# DEVELOPMENT OF SUDAIR INDUSTRIAL CITY PHASE 2 (26-09-2026) Latest approved. - B1

How a schedule from Primavera P6 changed from version to version. A marks actual dates.

## Version 1 (data date 2026-01-06, saved 2026-10-26, file Sudair 2 Pat2 = Infra Latest Baseline Approved..xer)

| ID | WBS | Task | Duration | Start | Finish | Predecessors | Total float |
| --- | --- | --- | --- | --- | --- | --- | --- |
|  | M | **Milestones** |  | 2026-01-06 | 2027-07-05 |  |  |
|  | 1 | **Major Milestone** |  | 2026-01-06 | 2027-07-05 |  |  |
| SDR-2-MILS-1000 |  | Project Start Milstone | 0d | 2026-01-06 | 2026-01-06 |  | 0d |
| SDR-2-MILS-1010 |  | Project Finish Milstone | 0d | 2027-07-05 | 2027-07-05 | SDR-2-CON-IR-ZA-2190, SDR-2-CON-IR-ZA-2510, SDR-2-CON-IR-ZA-2550, SDR-2-CON-LS-ZA-1020, SDR-2-CON-LS-ZA-1030, SDR-2-CON-LS-ZA-1040, SDR-2-CON-LS-ZA-1050, SDR-2-CON-LS-ZA-1060, SDR-2-CON-LS-ZG-1020, SDR-2-CON-LS-ZG-1030, SDR-2-CON-LS-ZG-1040, SDR-2-CON-LS-ZG-1050, SDR-2-CON-LS-ZG-1060, SDR-2-TC-SWDN-1020, SDR-2-TC-TSE-1040, SDR-2-TC-PW-1050, SDR-2-TC-EW-1060, SDR-2-CLO-TM-1000, SDR-2-CLO-DM-1000, SDR-2-CLO-DE-1000, SDR-2-CLO-RO-1000, SDR-2-CLO-HO-1000, SDR-2-MILS-1080 FF, SDR-2-MILS-1110 FF, SDR-2-CON-IR-ZA-2310 FF, SDR-2-CON-IR-ZA-2940 FF, SDR-2-CON-IR-ZA-2980 FF, SDR-2-MILS-1060 FF, SDR-2-MILS-1070 FF, SDR-2-CLO-AS-C-1010, SDR-2-CON-CC-ZA-1410, SDR-2-CON-CC-ZA-1110, SDR-2-CLO-AS-M-1010 | 0d |
|  | 3 | **Contractual Milestone** |  | 2026-02-05 | 2027-07-05 |  |  |
| SDR-2-MILS-1020 |  | Mobilization Finish Milestone | 0d | 2026-02-05 | 2026-02-05 | SDR-2-MOBL-1060 | 2d |
| SDR-2-MILS-1030 |  | Execution Plan and Baseline Submission Finish Milestone | 0d | 2026-02-05 | 2026-02-05 | SDR-2-PREL-1110 | 2d |
| SDR-2-MILS-1040 |  | Submission and approval of plans and materials Finish Milestone | 0d | 2026-03-05 | 2026-03-05 | SDR-2-PRO-MAL-E-1160, SDR-2-PRO-MAL-E-1200 FF, SDR-2-PRO-MSL-E-1170 FF, SDR-2-PRO-MAL-E-1170 FF | 20d |
| SDR-2-MILS-1060 |  | Completion of medium voltage works | 0d | 2027-01-21 | 2027-01-21 | SDR-2-CON-CC-ZA-1860, SDR-2-CON-CC-ZA-1620 FF | 50d |
| SDR-2-MILS-1050 |  | Completion of road works | 0d | 2027-04-17 | 2027-04-17 | SDR-2-CON-RW-ZA-1710, SDR-2-CON-RW-ZA-2410 FF, SDR-2-CON-RW-ZG-1160 FF | 17d |
| SDR-2-MILS-1070 |  | Completion of All Network work | 0d | 2027-05-04 | 2027-05-04 | SDR-2-CON-ST-ZA-4170, SDR-2-CON-ST-ZA-5670, SDR-2-CON-ST-ZA-4020 | 48d |
| SDR-2-MILS-1080 |  | Completion of finishing works in the project | 0d | 2027-07-05 | 2027-07-05 | SDR-2-CON-IR-ZA-2310, SDR-2-CON-IR-ZA-2800 | 0d |
|  | 2 | **Phases Milestone** |  | 2026-03-05 | 2027-07-05 |  |  |
| SDR-2-MILS-1090 |  | Engineering Phase Finish Milestone | 0d | 2026-03-05 | 2026-03-05 | SDR-2-ENG-APP-M-1290 | 20d |
| SDR-2-MILS-1100 |  | Procurment Phase Finish Milestone | 0d | 2026-11-21 | 2026-11-21 | SDR-2-PRO-ST-E-1240 | 57d |
| SDR-2-MILS-1110 |  | Construction Phase Finish Milestone | 0d | 2027-07-05 | 2027-07-05 | SDR-2-CON-IR-ZA-2670 FF, SDR-2-CLO-HO-1000 FF, SDR-2-CLO-HO-1000 | 0d |
|  | MB | **Mobilization** |  | 2026-01-06 | 2026-02-05 |  |  |
|  | 6 | **Office Site Prepare** |  | 2026-01-06 | 2026-01-10 |  |  |
| SDR-2-MOBL-1000 |  | Office Area Grading and Prepare | 4d | 2026-01-06 | 2026-01-10 | SDR-2-MILS-1000 | 2d |
|  | 3 | **Access Roads** |  | 2026-01-11 | 2026-01-14 |  |  |
| SDR-2-MOBL-1010 |  | Office Area Access Roads Prepare | 4d | 2026-01-11 | 2026-01-14 | SDR-2-MOBL-1000 | 2d |
|  | 5 | **Offices Installation** |  | 2026-01-15 | 2026-01-20 |  |  |
| SDR-2-MOBL-1020 |  | Offices Cabins Installation | 5d | 2026-01-15 | 2026-01-20 | SDR-2-MOBL-1010 | 2d |
|  | 10 | **Offices MEP Works** |  | 2026-01-21 | 2026-01-26 |  |  |
| SDR-2-MOBL-1030 |  | Office Cabins MEP Works | 5d | 2026-01-21 | 2026-01-26 | SDR-2-MOBL-1020 | 2d |
|  | 4 | **Manpower Mobilization** |  | 2026-01-21 | 2026-01-25 |  |  |
| SDR-2-MOBL-1040 |  | Manpower Arrive | 4d | 2026-01-21 | 2026-01-25 | SDR-2-MOBL-1030 SS | 2d |
|  | 7 | **Equipment Mobilization** |  | 2026-01-26 | 2026-01-31 |  |  |
| SDR-2-MOBL-1050 |  | Equipment Arrive | 5d | 2026-01-26 | 2026-01-31 | SDR-2-MOBL-1040 | 2d |
|  | 1 | **Project Signage** |  | 2026-02-01 | 2026-02-05 |  |  |
| SDR-2-MOBL-1060 |  | Project Sign Installation | 5d | 2026-02-01 | 2026-02-05 | SDR-2-MOBL-1050 | 2d |
|  | 2 | **Preliminary Submittals** |  | 2026-02-01 | 2026-02-05 |  |  |
|  | 1 | **HSSE Plan** |  | 2026-02-01 | 2026-02-05 |  |  |
| SDR-2-PREL-1000 |  | Project HSSE Plan Submission | 3d | 2026-02-01 | 2026-02-03 | SDR-2-MOBL-1030, SDR-2-MOBL-1050 | 2d |
| SDR-2-PREL-1010 |  | Project HSSE Plan Approval | 2d | 2026-02-04 | 2026-02-05 | SDR-2-PREL-1000 | 2d |
|  | 2 | **Quality Control Plan** |  | 2026-02-01 | 2026-02-05 |  |  |
| SDR-2-PREL-1020 |  | Project Quality Plan Submission | 3d | 2026-02-01 | 2026-02-03 | SDR-2-PREL-1000 SS | 2d |
| SDR-2-PREL-1030 |  | Project Quality Plan Approval | 2d | 2026-02-04 | 2026-02-05 | SDR-2-PREL-1020 | 2d |
|  | 3 | **Communications Plan** |  | 2026-02-01 | 2026-02-05 |  |  |
| SDR-2-PREL-1040 |  | Project Communication Plan Submission | 3d | 2026-02-01 | 2026-02-03 | SDR-2-PREL-1020 SS | 2d |
| SDR-2-PREL-1050 |  | Project Communication Plan Approval | 2d | 2026-02-04 | 2026-02-05 | SDR-2-PREL-1040 | 2d |
|  | 4 | **Risk Managment Plan** |  | 2026-02-01 | 2026-02-05 |  |  |
| SDR-2-PREL-1060 |  | Project Risk Managment Plan Submission | 3d | 2026-02-01 | 2026-02-03 | SDR-2-PREL-1040 SS | 2d |
| SDR-2-PREL-1070 |  | Project Risk Managment Plan Approvals | 2d | 2026-02-04 | 2026-02-05 | SDR-2-PREL-1060 | 2d |
|  | 5 | **Project Execution Plan** |  | 2026-02-01 | 2026-02-05 |  |  |
| SDR-2-PREL-1080 |  | Project Execution Plan Submission | 3d | 2026-02-01 | 2026-02-03 | SDR-2-PREL-1060 SS | 2d |
| SDR-2-PREL-1090 |  | Project Execution Plan Approvals | 2d | 2026-02-04 | 2026-02-05 | SDR-2-PREL-1080, SDR-2-MILS-1030 FF | 2d |
|  | 6 | **Project Schedule** |  | 2026-02-01 | 2026-02-05 |  |  |
| SDR-2-PREL-1100 |  | Project Schedule Submission | 3d | 2026-02-01 | 2026-02-03 | SDR-2-PREL-1000 SS | 2d |
| SDR-2-PREL-1110 |  | Project Schedule Approvals | 2d | 2026-02-04 | 2026-02-05 | SDR-2-PREL-1100 | 2d |
|  | EN | **Engineering** |  | 2026-02-08 | 2026-03-05 |  |  |
|  | 1 | **Shop Drawings Stage** |  | 2026-02-08 | 2026-03-05 |  |  |
|  | 1 | **Submission** |  | 2026-02-08 | 2026-02-21 |  |  |
|  | 4 | **Road Works** |  | 2026-02-08 | 2026-02-11 |  |  |
| SDR-2-ENG-SUB-C-1000 |  | DEMOLISH WORKS OVERALL PLAN Submission | 4d | 2026-02-08 | 2026-02-11 | SDR-2-MILS-1000 FS+28d, SDR-2-PREL-1010, SDR-2-PREL-1030, SDR-2-PREL-1050, SDR-2-PREL-1070, SDR-2-PREL-1090, SDR-2-MILS-1020 | 1d |
| SDR-2-ENG-SUB-C-1010 |  | ROAD ZONES LAYOUT PLAN Submission | 4d | 2026-02-08 | 2026-02-11 | SDR-2-MILS-1000 FS+28d | 1d |
| SDR-2-ENG-SUB-C-1020 |  | ROAD LAYOUT PLAN Submission | 4d | 2026-02-08 | 2026-02-11 | SDR-2-MILS-1000 FS+28d | 1d |
| SDR-2-ENG-SUB-C-1030 |  | TYPICAL ROAD CROSS SECTIONS Submission | 4d | 2026-02-08 | 2026-02-11 | SDR-2-MILS-1000 FS+28d | 1d |
| SDR-2-ENG-SUB-C-1040 |  | GRADING TYPICAL CROSS SECTIONS Submission | 4d | 2026-02-08 | 2026-02-11 | SDR-2-MILS-1000 FS+28d | 1d |
| SDR-2-ENG-SUB-C-1050 |  | ZONE A ROAD SETTING OUT PLAN Submission | 4d | 2026-02-08 | 2026-02-11 | SDR-2-MILS-1000 FS+28d | 1d |
| SDR-2-ENG-SUB-C-1060 |  | ZONE G ROAD SETTING OUT PLAN Submission | 4d | 2026-02-08 | 2026-02-11 | SDR-2-MILS-1000 FS+28d | 1d |
| SDR-2-ENG-SUB-C-1070 |  | TYPICAL PAVEMENT DETAILS Submission | 4d | 2026-02-08 | 2026-02-11 | SDR-2-MILS-1000 FS+28d | 4d |
| SDR-2-ENG-SUB-C-1080 |  | TYPICAL JUNCTION DETAIL LOCAL-1 & LOCAL-1 (40M ROW) Submission | 4d | 2026-02-08 | 2026-02-11 | SDR-2-MILS-1000 FS+28d | 4d |
| SDR-2-ENG-SUB-C-1090 |  | ROAD PROFILES (ZONE A) Submission | 4d | 2026-02-08 | 2026-02-11 | SDR-2-MILS-1000 FS+28d | 1d |
| SDR-2-ENG-SUB-C-1100 |  | ROAD PROFILES (ZONE G) Submission | 4d | 2026-02-08 | 2026-02-11 | SDR-2-MILS-1000 FS+28d | 1d |
| SDR-2-ENG-SUB-C-1110 |  | Overall Kerbing and Pavement Layout Submission | 4d | 2026-02-08 | 2026-02-11 | SDR-2-MILS-1000 FS+28d | 4d |
| SDR-2-ENG-SUB-C-1120 |  | Typical Concrete Kerb Details Submission | 4d | 2026-02-08 | 2026-02-11 | SDR-2-MILS-1000 FS+28d | 4d |
| SDR-2-ENG-SUB-C-1130 |  | Typical Pavement Details Submission | 4d | 2026-02-08 | 2026-02-11 | SDR-2-MILS-1000 FS+28d | 4d |
| SDR-2-ENG-SUB-C-1140 |  | Road Marking Layout Submission | 4d | 2026-02-08 | 2026-02-11 | SDR-2-MILS-1000 FS+28d | 4d |
| SDR-2-ENG-SUB-C-1150 |  | Road Marking Details Submission | 4d | 2026-02-08 | 2026-02-11 | SDR-2-MILS-1000 FS+28d | 4d |

| ID | WBS | Task | Duration | Start | Finish | Predecessors | Total float |
| --- | --- | --- | --- | --- | --- | --- | --- |
| SDR-2-ENG-SUB-C-1160 |  | Road Marking And Signage Typical Standard Details Submission | 4d | 2026-02-08 | 2026-02-11 | SDR-2-MILS-1000 FS+28d | 4d |
| SDR-2-ENG-SUB-C-1170 |  | Standard Details Submission | 4d | 2026-02-08 | 2026-02-11 | SDR-2-MILS-1000 FS+28d | 1d |
| SDR-2-ENG-SUB-C-1180 |  | Site Safety Notice Board Submission | 4d | 2026-02-08 | 2026-02-11 | SDR-2-MILS-1000 FS+28d | 1d |
| SDR-2-ENG-SUB-C-1190 |  | Location Plan For Traffic Signage Submission | 4d | 2026-02-08 | 2026-02-11 | SDR-2-MILS-1000 FS+28d | 4d |
|  | 5 | **Storm Water Drainage Network** |  | 2026-02-08 | 2026-02-11 |  |  |
| SDR-2-ENG-SUB-M-1000 |  | Storm Drainage Master Plan Submission | 4d | 2026-02-08 | 2026-02-11 | SDR-2-MILS-1000 FS+28d | 1d |
| SDR-2-ENG-SUB-M-1010 |  | Storm Drainage Layout Submission | 4d | 2026-02-08 | 2026-02-11 | SDR-2-MILS-1000 FS+28d | 20d |
| SDR-2-ENG-SUB-M-1020 |  | Storm Network Profile Submission | 4d | 2026-02-08 | 2026-02-11 | SDR-2-MILS-1000 FS+28d | 1d |
| SDR-2-ENG-SUB-M-1030 |  | Storm Network Standard Details Submission | 4d | 2026-02-08 | 2026-02-11 | SDR-2-MILS-1000 FS+28d | 1d |
| SDR-2-ENG-SUB-M-1040 |  | Storm Network Section Submission | 4d | 2026-02-08 | 2026-02-11 | SDR-2-MILS-1000 FS+28d | 4d |
| SDR-2-ENG-SUB-M-1050 |  | POND A LAYOUT AND PROFILE Submission | 4d | 2026-02-08 | 2026-02-11 | SDR-2-MILS-1000 FS+28d | 1d |
| SDR-2-ENG-SUB-M-1060 |  | TYPICAL ENERGY DISSAPATION DETAILS Submission | 4d | 2026-02-08 | 2026-02-11 | SDR-2-MILS-1000 FS+28d | 4d |
| SDR-2-ENG-SUB-M-1070 |  | STORM WATER POND SIPHON PIPE DETAILS Submission | 4d | 2026-02-08 | 2026-02-11 | SDR-2-MILS-1000 FS+28d | 1d |
| SDR-2-ENG-SUB-M-1080 |  | REINFORCEMENT CONCRETE WEIR AND GABION WALL DETAILS Submission | 4d | 2026-02-08 | 2026-02-11 | SDR-2-MILS-1000 FS+28d | 4d |
| SDR-2-ENG-SUB-M-1090 |  | TYPICAL TRENCH AND PIPE BEDDING DETAILS Submission | 4d | 2026-02-08 | 2026-02-11 | SDR-2-MILS-1000 FS+28d | 4d |
| SDR-2-ENG-SUB-M-1100 |  | FLUSH AND KERB INLET MANHOLE DETAILS Submission | 4d | 2026-02-08 | 2026-02-11 | SDR-2-MILS-1000 FS+28d | 4d |
| SDR-2-ENG-SUB-M-1110 |  | BOX PIPE CONNECTION AND BOX PIPE WIDENING DETAILS Submission | 4d | 2026-02-08 | 2026-02-11 | SDR-2-MILS-1000 FS+28d | 4d |
| SDR-2-ENG-SUB-M-1120 |  | TYPICAL BOX PIPE JUNCTION DETAILS Submission | 4d | 2026-02-08 | 2026-02-11 | SDR-2-MILS-1000 FS+28d | 4d |
| SDR-2-ENG-SUB-M-1130 |  | TYPICAL JUNCTION CHAMBER REINFORCEMENT DETAILS Submission | 4d | 2026-02-08 | 2026-02-11 | SDR-2-MILS-1000 FS+28d | 4d |
| SDR-2-ENG-SUB-M-1140 |  | DEPRESSED KERB TO SWALE/MANHOLE DETAILS Submission | 4d | 2026-02-08 | 2026-02-11 | SDR-2-MILS-1000 FS+28d | 4d |
| SDR-2-ENG-SUB-M-1150 |  | BOX PIPE AND SWALE CONNECTION DETAILS Submission | 4d | 2026-02-08 | 2026-02-11 | SDR-2-MILS-1000 FS+28d | 4d |
|  | 6 | **Sewerage Network** |  | 2026-02-08 | 2026-02-11 |  |  |
| SDR-2-ENG-SUB-M-1160 |  | Sewage Layout Master Plan Submission | 4d | 2026-02-08 | 2026-02-11 | SDR-2-MILS-1000 FS+28d | 1d |
| SDR-2-ENG-SUB-M-1170 |  | Sewage Network Profile Submission | 4d | 2026-02-08 | 2026-02-11 | SDR-2-MILS-1000 FS+28d | 1d |
| SDR-2-ENG-SUB-M-1180 |  | Sewage Network Standard Details Submission | 4d | 2026-02-08 | 2026-02-11 | SDR-2-MILS-1000 FS+28d | 1d |
| SDR-2-ENG-SUB-M-1190 |  | Sewage Network Section Submission | 4d | 2026-02-08 | 2026-02-11 | SDR-2-MILS-1000 FS+28d | 1d |
|  | 7 | **TSE Network** |  | 2026-02-08 | 2026-02-11 |  |  |
| SDR-2-ENG-SUB-M-1200 |  | TSE Layout Master Plan Submission | 4d | 2026-02-08 | 2026-02-11 | SDR-2-MILS-1000 FS+28d | 1d |
| SDR-2-ENG-SUB-M-1210 |  | TSE Network Profile Submission | 4d | 2026-02-08 | 2026-02-11 | SDR-2-MILS-1000 FS+28d | 1d |
| SDR-2-ENG-SUB-M-1220 |  | TSE Network Standard Details Submission | 4d | 2026-02-08 | 2026-02-11 | SDR-2-MILS-1000 FS+28d | 1d |
| SDR-2-ENG-SUB-M-1230 |  | TSE Network Section Submission | 4d | 2026-02-08 | 2026-02-11 | SDR-2-MILS-1000 FS+28d | 1d |
|  | 8 | **Portable Water** |  | 2026-02-08 | 2026-02-11 |  |  |
| SDR-2-ENG-SUB-M-1240 |  | Potable Water Piping Layout Master Plan Submission | 4d | 2026-02-08 | 2026-02-11 | SDR-2-MILS-1000 FS+28d | 4d |
| SDR-2-ENG-SUB-M-1250 |  | Potable Water Piping Layout Submission | 4d | 2026-02-08 | 2026-02-11 | SDR-2-MILS-1000 FS+28d | 4d |
| SDR-2-ENG-SUB-M-1260 |  | Potable Water Standard Details Submission | 4d | 2026-02-08 | 2026-02-11 | SDR-2-MILS-1000 FS+28d | 4d |
| SDR-2-ENG-SUB-M-1270 |  | Potable Water Section Submission | 4d | 2026-02-08 | 2026-02-11 | SDR-2-MILS-1000 FS+28d | 4d |
|  | 9 | **Electrical** |  | 2026-02-08 | 2026-02-11 |  |  |
| SDR-2-ENG-SUB-E-1000 |  | MV Network Layout Submission | 4d | 2026-02-08 | 2026-02-11 | SDR-2-MILS-1000 FS+28d | 4d |
| SDR-2-ENG-SUB-E-1010 |  | MV Single Line Diagram Submission | 4d | 2026-02-08 | 2026-02-11 | SDR-2-MILS-1000 FS+28d | 4d |
| SDR-2-ENG-SUB-E-1020 |  | Design Of MV Loops Submission | 4d | 2026-02-08 | 2026-02-11 | SDR-2-MILS-1000 FS+28d | 4d |
| SDR-2-ENG-SUB-E-1030 |  | Loads For Plots Submission | 4d | 2026-02-08 | 2026-02-11 | SDR-2-MILS-1000 FS+28d | 4d |
| SDR-2-ENG-SUB-E-1040 |  | Distribution Substation Submission | 4d | 2026-02-08 | 2026-02-11 | SDR-2-MILS-1000 FS+28d | 4d |
| SDR-2-ENG-SUB-E-1050 |  | MV Trench Configuration Details Submission | 4d | 2026-02-08 | 2026-02-11 | SDR-2-MILS-1000 FS+28d | 4d |
| SDR-2-ENG-SUB-E-1060 |  | MV Electrical Duct Banks Details Submission | 4d | 2026-02-08 | 2026-02-11 | SDR-2-MILS-1000 FS+28d | 4d |
| SDR-2-ENG-SUB-E-1070 |  | Distribution Transformers Submission | 4d | 2026-02-08 | 2026-02-11 | SDR-2-MILS-1000 FS+28d | 4d |
| SDR-2-ENG-SUB-E-1080 |  | Street Lighting Layout Submission | 4d | 2026-02-08 | 2026-02-11 | SDR-2-MILS-1000 FS+28d | 4d |
| SDR-2-ENG-SUB-E-1090 |  | Single Line Diagram for Street Lighting Submission | 4d | 2026-02-08 | 2026-02-11 | SDR-2-MILS-1000 FS+28d | 4d |
| SDR-2-ENG-SUB-E-1100 |  | Voltage Drop Calculations Submission | 4d | 2026-02-08 | 2026-02-11 | SDR-2-MILS-1000 FS+28d | 4d |
| SDR-2-ENG-SUB-E-1110 |  | Construction Details Lighting Poles Submission | 4d | 2026-02-08 | 2026-02-11 | SDR-2-MILS-1000 FS+28d | 4d |
| SDR-2-ENG-SUB-E-1120 |  | Base Plate Construction Details Submission | 4d | 2026-02-08 | 2026-02-11 | SDR-2-MILS-1000 FS+28d | 4d |
| SDR-2-ENG-SUB-E-1130 |  | Lighting Pole Identification Submission | 4d | 2026-02-08 | 2026-02-11 | SDR-2-MILS-1000 FS+28d | 4d |
| SDR-2-ENG-SUB-E-1140 |  | Typical Feeder Pillar and Timer Switch Details Submission | 4d | 2026-02-08 | 2026-02-11 | SDR-2-MILS-1000 FS+28d | 4d |
| SDR-2-ENG-SUB-E-1150 |  | Public Lighting Draw-Pit Construction Details Submission | 4d | 2026-02-08 | 2026-02-11 | SDR-2-MILS-1000 FS+28d | 4d |
| SDR-2-ENG-SUB-E-1160 |  | Concrete Earth Pit Construction Details Submission | 4d | 2026-02-08 | 2026-02-11 | SDR-2-MILS-1000 FS+28d | 4d |
| SDR-2-ENG-SUB-E-1170 |  | Telecom Overall Layout Submission | 4d | 2026-02-08 | 2026-02-11 | SDR-2-MILS-1000 FS+28d | 4d |
| SDR-2-ENG-SUB-E-1180 |  | Typical Trenches Detail Submission | 4d | 2026-02-08 | 2026-02-11 | SDR-2-MILS-1000 FS+28d | 4d |
| SDR-2-ENG-SUB-E-1190 |  | Typical Trenches Crossing Detail Submission | 4d | 2026-02-08 | 2026-02-11 | SDR-2-MILS-1000 FS+28d | 4d |
| SDR-2-ENG-SUB-E-1200 |  | Manholes,Hand-Holes Details Submission | 4d | 2026-02-08 | 2026-02-11 | SDR-2-MILS-1000 FS+28d | 4d |
| SDR-2-ENG-SUB-E-1210 |  | Typical Details Of Pock Out Ducts Submission | 4d | 2026-02-08 | 2026-02-11 | SDR-2-MILS-1000 FS+28d | 4d |
|  | 11 | **CCTV** |  | 2026-02-08 | 2026-02-11 |  |  |
| SDR-2-ENG-SUB-E-1220 |  | CCTV Overall Layout Submission | 4d | 2026-02-08 | 2026-02-11 | SDR-2-MILS-1000 FS+28d | 4d |
| SDR-2-ENG-SUB-E-1230 |  | CCTV Control Room Layout Submission | 4d | 2026-02-08 | 2026-02-11 | SDR-2-MILS-1000 FS+28d | 4d |
| SDR-2-ENG-SUB-E-1240 |  | CCTV System Schematic Drawing Submission | 4d | 2026-02-08 | 2026-02-11 | SDR-2-MILS-1000 FS+28d | 4d |
| SDR-2-ENG-SUB-E-1250 |  | CCTV System 7 MTR Pole Installation Detail Submission | 4d | 2026-02-08 | 2026-02-11 | SDR-2-MILS-1000 FS+28d | 4d |
| SDR-2-ENG-SUB-E-1260 |  | CCTV System 25 MTR Pole Installation Detail Submission | 4d | 2026-02-08 | 2026-02-11 | SDR-2-MILS-1000 FS+28d | 4d |
| SDR-2-ENG-SUB-E-1270 |  | CCTV System 35 MTR Pole Installation Detail Submission | 4d | 2026-02-08 | 2026-02-11 | SDR-2-MILS-1000 FS+28d | 4d |
| SDR-2-ENG-SUB-E-1280 |  | Typical Solar Panel Installation Detail Submission | 4d | 2026-02-08 | 2026-02-11 | SDR-2-MILS-1000 FS+28d | 4d |
|  | 10 | **Landscape & Irrigation Works** |  | 2026-02-17 | 2026-02-21 |  |  |
| SDR-2-ENG-SUB-M-1280 |  | Irrigation Layout Master Plan Submission | 4d | 2026-02-17 | 2026-02-21 | SDR-2-MILS-1000 FS+36d | 7d |
| SDR-2-ENG-SUB-M-1290 |  | Irrigation Network Profile Submission | 4d | 2026-02-17 | 2026-02-21 | SDR-2-MILS-1000 FS+36d | 20d |

| ID | WBS | Task | Duration | Start | Finish | Predecessors | Total float |
| --- | --- | --- | --- | --- | --- | --- | --- |
| SDR-2-ENG-SUB-M-1300 |  | Irrigation Network Standard Details Submission | 4d | 2026-02-17 | 2026-02-21 | SDR-2-MILS-1000 FS+36d | 7d |
| SDR-2-ENG-SUB-M-1310 |  | Irrigation Network Section Submission | 4d | 2026-02-17 | 2026-02-21 | SDR-2-MILS-1000 FS+36d | 7d |
| SDR-2-ENG-SUB-M-1320 |  | Landscape Layout Master Plan Submission | 4d | 2026-02-17 | 2026-02-21 | SDR-2-MILS-1000 FS+36d | 7d |
|  | 4 | **Approvals** |  | 2026-02-12 | 2026-03-05 |  |  |
|  | 4 | **Road Works** |  | 2026-02-12 | 2026-02-24 |  |  |
| SDR-2-ENG-APP-C-1000 |  | DEMOLISH WORKS OVERALL PLAN Approval | 11d | 2026-02-12 | 2026-02-24 | SDR-2-ENG-SUB-C-1000 | 1d |
| SDR-2-ENG-APP-C-1010 |  | ROAD ZONES LAYOUT PLAN Approval | 11d | 2026-02-12 | 2026-02-24 | SDR-2-ENG-SUB-C-1010 | 1d |
| SDR-2-ENG-APP-C-1020 |  | ROAD LAYOUT PLAN Approval | 11d | 2026-02-12 | 2026-02-24 | SDR-2-ENG-SUB-C-1020 | 1d |
| SDR-2-ENG-APP-C-1030 |  | TYPICAL ROAD CROSS SECTIONS Approval | 11d | 2026-02-12 | 2026-02-24 | SDR-2-ENG-SUB-C-1030 | 1d |
| SDR-2-ENG-APP-C-1040 |  | GRADING TYPICAL CROSS SECTIONS Approval | 11d | 2026-02-12 | 2026-02-24 | SDR-2-ENG-SUB-C-1040 | 1d |
| SDR-2-ENG-APP-C-1050 |  | ZONE A ROAD SETTING OUT PLAN Approval | 11d | 2026-02-12 | 2026-02-24 | SDR-2-ENG-SUB-C-1050 | 1d |
| SDR-2-ENG-APP-C-1060 |  | ZONE G ROAD SETTING OUT PLAN Approval | 11d | 2026-02-12 | 2026-02-24 | SDR-2-ENG-SUB-C-1060 | 1d |
| SDR-2-ENG-APP-C-1070 |  | TYPICAL PAVEMENT DETAILS Approval | 11d | 2026-02-12 | 2026-02-24 | SDR-2-ENG-SUB-C-1070 | 4d |
| SDR-2-ENG-APP-C-1080 |  | TYPICAL JUNCTION DETAIL LOCAL-1 & LOCAL-1 (40M ROW) Approval | 11d | 2026-02-12 | 2026-02-24 | SDR-2-ENG-SUB-C-1080 | 4d |
| SDR-2-ENG-APP-C-1090 |  | ROAD PROFILES (ZONE A) Approval | 11d | 2026-02-12 | 2026-02-24 | SDR-2-ENG-SUB-C-1090 | 1d |
| SDR-2-ENG-APP-C-1100 |  | ROAD PROFILES (ZONE G) Approval | 11d | 2026-02-12 | 2026-02-24 | SDR-2-ENG-SUB-C-1100 | 1d |
| SDR-2-ENG-APP-C-1110 |  | Overall Kerbing and Pavement Layout Approval | 11d | 2026-02-12 | 2026-02-24 | SDR-2-ENG-SUB-C-1110 | 4d |
| SDR-2-ENG-APP-C-1120 |  | Typical Concrete Kerb Details Approval | 11d | 2026-02-12 | 2026-02-24 | SDR-2-ENG-SUB-C-1120 | 4d |
| SDR-2-ENG-APP-C-1130 |  | Typical Pavement Details Approval | 11d | 2026-02-12 | 2026-02-24 | SDR-2-ENG-SUB-C-1130 | 4d |
| SDR-2-ENG-APP-C-1140 |  | Road Marking Layout Approval | 11d | 2026-02-12 | 2026-02-24 | SDR-2-ENG-SUB-C-1140 | 4d |
| SDR-2-ENG-APP-C-1150 |  | Road Marking Details Approval | 11d | 2026-02-12 | 2026-02-24 | SDR-2-ENG-SUB-C-1150 | 4d |
| SDR-2-ENG-APP-C-1160 |  | Road Marking And Signage Typical Standard Details Approval | 11d | 2026-02-12 | 2026-02-24 | SDR-2-ENG-SUB-C-1160 | 4d |
| SDR-2-ENG-APP-C-1170 |  | Standard Details Approval | 11d | 2026-02-12 | 2026-02-24 | SDR-2-ENG-SUB-C-1170 | 1d |
| SDR-2-ENG-APP-C-1180 |  | Site Safety Notice Board Approval | 11d | 2026-02-12 | 2026-02-24 | SDR-2-ENG-SUB-C-1180 | 1d |
| SDR-2-ENG-APP-C-1190 |  | Location Plan For Traffic Signage Approval | 11d | 2026-02-12 | 2026-02-24 | SDR-2-ENG-SUB-C-1190 | 4d |
|  | 5 | **Storm Water Drainage Network** |  | 2026-02-12 | 2026-02-24 |  |  |
| SDR-2-ENG-APP-M-1000 |  | Storm Drainage Master Plan Approval | 11d | 2026-02-12 | 2026-02-24 | SDR-2-ENG-SUB-M-1000 | 1d |
| SDR-2-ENG-APP-M-1010 |  | Storm Drainage Layout Approval | 11d | 2026-02-12 | 2026-02-24 | SDR-2-ENG-SUB-M-1010 | 20d |
| SDR-2-ENG-APP-M-1020 |  | Storm Network Profile Approval | 11d | 2026-02-12 | 2026-02-24 | SDR-2-ENG-SUB-M-1020 | 1d |
| SDR-2-ENG-APP-M-1030 |  | Storm Network Standard Details Approval | 11d | 2026-02-12 | 2026-02-24 | SDR-2-ENG-SUB-M-1030 | 1d |
| SDR-2-ENG-APP-M-1040 |  | Storm Network Section Approval | 11d | 2026-02-12 | 2026-02-24 | SDR-2-ENG-SUB-M-1040 | 4d |
| SDR-2-ENG-APP-M-1050 |  | POND A LAYOUT AND PROFILE Approval | 11d | 2026-02-12 | 2026-02-24 | SDR-2-ENG-SUB-M-1050 | 1d |
| SDR-2-ENG-APP-M-1060 |  | TYPICAL ENERGY DISSAPATION DETAILS Approval | 11d | 2026-02-12 | 2026-02-24 | SDR-2-ENG-SUB-M-1060 | 4d |
| SDR-2-ENG-APP-M-1070 |  | STORM WATER POND SIPHON PIPE DETAILS SApproval | 11d | 2026-02-12 | 2026-02-24 | SDR-2-ENG-SUB-M-1070 | 1d |
| SDR-2-ENG-APP-M-1080 |  | REINFORCEMENT CONCRETE WEIR AND GABION WALL DETAILS Approval | 11d | 2026-02-12 | 2026-02-24 | SDR-2-ENG-SUB-M-1080 | 4d |
| SDR-2-ENG-APP-M-1090 |  | TYPICAL TRENCH AND PIPE BEDDING DETAILS Approval | 11d | 2026-02-12 | 2026-02-24 | SDR-2-ENG-SUB-M-1090 | 4d |
| SDR-2-ENG-APP-M-1100 |  | FLUSH AND KERB INLET MANHOLE DETAILS Approval | 11d | 2026-02-12 | 2026-02-24 | SDR-2-ENG-SUB-M-1100 | 4d |
| SDR-2-ENG-APP-M-1110 |  | BOX PIPE CONNECTION AND BOX PIPE WIDENING DETAILS Approval | 11d | 2026-02-12 | 2026-02-24 | SDR-2-ENG-SUB-M-1110 | 4d |
| SDR-2-ENG-APP-M-1120 |  | TYPICAL BOX PIPE JUNCTION DETAILS Approval | 11d | 2026-02-12 | 2026-02-24 | SDR-2-ENG-SUB-M-1120 | 4d |
| SDR-2-ENG-APP-M-1130 |  | TYPICAL JUNCTION CHAMBER REINFORCEMENT DETAILS Approval | 11d | 2026-02-12 | 2026-02-24 | SDR-2-ENG-SUB-M-1130 | 4d |
| SDR-2-ENG-APP-M-1140 |  | DEPRESSED KERB TO SWALE/MANHOLE DETAILS Approval | 11d | 2026-02-12 | 2026-02-24 | SDR-2-ENG-SUB-M-1140 | 4d |
| SDR-2-ENG-APP-M-1150 |  | BOX PIPE AND SWALE CONNECTION DETAILS Approval | 11d | 2026-02-12 | 2026-02-24 | SDR-2-ENG-SUB-M-1150 | 4d |
|  | 6 | **Sewerage Network** |  | 2026-02-12 | 2026-02-24 |  |  |
| SDR-2-ENG-APP-M-1160 |  | Sewage Layout Master Plan Approval | 11d | 2026-02-12 | 2026-02-24 | SDR-2-ENG-SUB-M-1160 | 1d |
| SDR-2-ENG-APP-M-1170 |  | Sewage Network Profile Approval | 11d | 2026-02-12 | 2026-02-24 | SDR-2-ENG-SUB-M-1170 | 1d |
| SDR-2-ENG-APP-M-1180 |  | Sewage Network Standard Details Approval | 11d | 2026-02-12 | 2026-02-24 | SDR-2-ENG-SUB-M-1180 | 1d |
| SDR-2-ENG-APP-M-1190 |  | Sewage Network Section Approval | 11d | 2026-02-12 | 2026-02-24 | SDR-2-ENG-SUB-M-1190 | 1d |
|  | 7 | **TSE Network** |  | 2026-02-12 | 2026-02-24 |  |  |
| SDR-2-ENG-APP-M-1200 |  | TSE Layout Master Plan Approval | 11d | 2026-02-12 | 2026-02-24 | SDR-2-ENG-SUB-M-1200 | 1d |
| SDR-2-ENG-APP-M-1210 |  | TSE Network Profile Approval | 11d | 2026-02-12 | 2026-02-24 | SDR-2-ENG-SUB-M-1210 | 1d |
| SDR-2-ENG-APP-M-1220 |  | TSE Network Standard Details Approval | 11d | 2026-02-12 | 2026-02-24 | SDR-2-ENG-SUB-M-1220 | 1d |
| SDR-2-ENG-APP-M-1230 |  | TSE Network Section Approval | 11d | 2026-02-12 | 2026-02-24 | SDR-2-ENG-SUB-M-1230 | 1d |
|  | 8 | **Portable Water** |  | 2026-02-12 | 2026-02-24 |  |  |
| SDR-2-ENG-APP-M-1240 |  | Potable Water Piping Layout Master Plan Approval | 11d | 2026-02-12 | 2026-02-24 | SDR-2-ENG-SUB-M-1240 | 4d |
| SDR-2-ENG-APP-M-1250 |  | Potable Water Piping Layout Approval | 11d | 2026-02-12 | 2026-02-24 | SDR-2-ENG-SUB-M-1250 | 4d |
| SDR-2-ENG-APP-M-1260 |  | Potable Water Standard Details Approval | 11d | 2026-02-12 | 2026-02-24 | SDR-2-ENG-SUB-M-1260 | 4d |
| SDR-2-ENG-APP-M-1270 |  | Potable Water Section Approval | 11d | 2026-02-12 | 2026-02-24 | SDR-2-ENG-SUB-M-1270 | 4d |
|  | 9 | **Electrical** |  | 2026-02-12 | 2026-02-24 |  |  |
| SDR-2-ENG-APP-E-1000 |  | MV Network Layout Approval | 11d | 2026-02-12 | 2026-02-24 | SDR-2-ENG-SUB-E-1000 | 4d |
| SDR-2-ENG-APP-E-1010 |  | MV Single Line Diagram Approval | 11d | 2026-02-12 | 2026-02-24 | SDR-2-ENG-SUB-E-1010 | 4d |
| SDR-2-ENG-APP-E-1020 |  | Design Of MV Loops Approval | 11d | 2026-02-12 | 2026-02-24 | SDR-2-ENG-SUB-E-1020 | 4d |
| SDR-2-ENG-APP-E-1030 |  | Loads For Plots Approval | 11d | 2026-02-12 | 2026-02-24 | SDR-2-ENG-SUB-E-1030 | 4d |
| SDR-2-ENG-APP-E-1040 |  | Distribution Substation Approval | 11d | 2026-02-12 | 2026-02-24 | SDR-2-ENG-SUB-E-1040 | 4d |
| SDR-2-ENG-APP-E-1050 |  | MV Trench Configuration Details Approval | 11d | 2026-02-12 | 2026-02-24 | SDR-2-ENG-SUB-E-1050 | 4d |
| SDR-2-ENG-APP-E-1060 |  | MV Electrical Duct Banks Details Approval | 11d | 2026-02-12 | 2026-02-24 | SDR-2-ENG-SUB-E-1060 | 4d |
| SDR-2-ENG-APP-E-1070 |  | Distribution Transformers Approval | 11d | 2026-02-12 | 2026-02-24 | SDR-2-ENG-SUB-E-1070 | 4d |
| SDR-2-ENG-APP-E-1080 |  | Street Lighting Layout Approval | 11d | 2026-02-12 | 2026-02-24 | SDR-2-ENG-SUB-E-1080 | 4d |
| SDR-2-ENG-APP-E-1090 |  | Single Line Diagram for Street Lighting Approval | 11d | 2026-02-12 | 2026-02-24 | SDR-2-ENG-SUB-E-1090 | 4d |
| SDR-2-ENG-APP-E-1100 |  | Voltage Drop Calculations Approval | 11d | 2026-02-12 | 2026-02-24 | SDR-2-ENG-SUB-E-1100 | 4d |
| SDR-2-ENG-APP-E-1110 |  | Construction Details Lighting Poles Approval | 11d | 2026-02-12 | 2026-02-24 | SDR-2-ENG-SUB-E-1110 | 4d |

| ID | WBS | Task | Duration | Start | Finish | Predecessors | Total float |
| --- | --- | --- | --- | --- | --- | --- | --- |
| SDR-2-ENG-APP-E-1120 |  | Base Plate Construction Details Approval | 11d | 2026-02-12 | 2026-02-24 | SDR-2-ENG-SUB-E-1120 | 4d |
| SDR-2-ENG-APP-E-1130 |  | Lighting Pole Identification Approval | 11d | 2026-02-12 | 2026-02-24 | SDR-2-ENG-SUB-E-1130 | 4d |
| SDR-2-ENG-APP-E-1140 |  | Typical Feeder Pillar and Timer Switch Details Approval | 11d | 2026-02-12 | 2026-02-24 | SDR-2-ENG-SUB-E-1140 | 4d |
| SDR-2-ENG-APP-E-1150 |  | Public Lighting Draw-Pit Construction Details Approval | 11d | 2026-02-12 | 2026-02-24 | SDR-2-ENG-SUB-E-1150 | 4d |
| SDR-2-ENG-APP-E-1160 |  | Concrete Earth Pit Construction Details Approval | 11d | 2026-02-12 | 2026-02-24 | SDR-2-ENG-SUB-E-1160 | 4d |
| SDR-2-ENG-APP-E-1170 |  | Telecom Overall Layout Approval | 11d | 2026-02-12 | 2026-02-24 | SDR-2-ENG-SUB-E-1170 | 4d |
| SDR-2-ENG-APP-E-1180 |  | Typical Trenches Detail Approval | 11d | 2026-02-12 | 2026-02-24 | SDR-2-ENG-SUB-E-1180 | 4d |
| SDR-2-ENG-APP-E-1190 |  | Typical Trenches Crossing Detail Approval | 11d | 2026-02-12 | 2026-02-24 | SDR-2-ENG-SUB-E-1190 | 4d |
| SDR-2-ENG-APP-E-1200 |  | Manholes,Hand-Holes Details Approval | 11d | 2026-02-12 | 2026-02-24 | SDR-2-ENG-SUB-E-1200 | 4d |
| SDR-2-ENG-APP-E-1210 |  | Typical Details Of Pock Out Ducts Approval | 11d | 2026-02-12 | 2026-02-24 | SDR-2-ENG-SUB-E-1210 | 4d |
|  | 11 | **CCTV** |  | 2026-02-12 | 2026-02-24 |  |  |
| SDR-2-ENG-APP-E-1220 |  | CCTV Overall Layout Approval | 11d | 2026-02-12 | 2026-02-24 | SDR-2-ENG-SUB-E-1220 | 4d |
| SDR-2-ENG-APP-E-1230 |  | CCTV Control Room Layout Approval | 11d | 2026-02-12 | 2026-02-24 | SDR-2-ENG-SUB-E-1230 | 4d |
| SDR-2-ENG-APP-E-1240 |  | CCTV System Schematic Drawing Approval | 11d | 2026-02-12 | 2026-02-24 | SDR-2-ENG-SUB-E-1240 | 4d |
| SDR-2-ENG-APP-E-1250 |  | CCTV System 7 MTR Pole Installation Detail Approval | 11d | 2026-02-12 | 2026-02-24 | SDR-2-ENG-SUB-E-1250 | 4d |
| SDR-2-ENG-APP-E-1260 |  | CCTV System 25 MTR Pole Installation Detail Approval | 11d | 2026-02-12 | 2026-02-24 | SDR-2-ENG-SUB-E-1260 | 4d |
| SDR-2-ENG-APP-E-1270 |  | CCTV System 35 MTR Pole Installation Detail Approval | 11d | 2026-02-12 | 2026-02-24 | SDR-2-ENG-SUB-E-1270 | 4d |
| SDR-2-ENG-APP-E-1280 |  | Typical Solar Panel Installation Detail Approval | 11d | 2026-02-12 | 2026-02-24 | SDR-2-ENG-SUB-E-1280 | 4d |
|  | 10 | **Landscape & Irrigation Works** |  | 2026-02-22 | 2026-03-05 |  |  |
| SDR-2-ENG-APP-M-1280 |  | Irrigation Layout Master Plan Approval | 11d | 2026-02-22 | 2026-03-05 | SDR-2-ENG-SUB-M-1280 | 7d |
| SDR-2-ENG-APP-M-1290 |  | Irrigation Network Profile Approval | 11d | 2026-02-22 | 2026-03-05 | SDR-2-ENG-SUB-M-1290 | 20d |
| SDR-2-ENG-APP-M-1300 |  | Irrigation Network Standard Details Approval | 11d | 2026-02-22 | 2026-03-05 | SDR-2-ENG-SUB-M-1300 | 7d |
| SDR-2-ENG-APP-M-1310 |  | Irrigation Network Section Approval | 11d | 2026-02-22 | 2026-03-05 | SDR-2-ENG-SUB-M-1310 | 7d |
| SDR-2-ENG-APP-M-1320 |  | Landscape Layout Master Plan Approval | 11d | 2026-02-22 | 2026-03-05 | SDR-2-ENG-SUB-M-1320 | 7d |
|  | 3 | **Materials** |  | 2026-02-25 | 2026-03-05 |  |  |
|  | 5 | **Materials Submission** |  | 2026-02-25 | 2026-02-28 |  |  |
|  | 2 | **Short Lead Items** |  | 2026-02-25 | 2026-02-26 |  |  |
|  | 2 | **Civil** |  | 2026-02-25 | 2026-02-26 |  |  |
| SDR-2-PRO-MSS-C-1000 |  | Earth works material submission | 2d | 2026-02-25 | 2026-02-26 | SDR-2-ENG-APP-C-1020, SDR-2-ENG-APP-C-1000, SDR-2-ENG-APP-C-1010, SDR-2-ENG-APP-C-1050, SDR-2-ENG-APP-C-1060, SDR-2-ENG-APP-C-1090, SDR-2-ENG-APP-C-1100, SDR-2-ENG-APP-C-1170, SDR-2-ENG-APP-C-1180 | 1d |
| SDR-2-PRO-MSS-C-1010 |  | Ready mix concrete submission | 2d | 2026-02-25 | 2026-02-26 | SDR-2-ENG-APP-C-1120 | 4d |
| SDR-2-PRO-MSS-C-1020 |  | Asphalt Mix submission | 2d | 2026-02-25 | 2026-02-26 | SDR-2-ENG-APP-C-1020 | 4d |
| SDR-2-PRO-MSS-C-1030 |  | Road Marking submission | 2d | 2026-02-25 | 2026-02-26 | SDR-2-ENG-APP-C-1140, SDR-2-ENG-APP-C-1150, SDR-2-ENG-APP-C-1160 | 4d |
| SDR-2-PRO-MSS-C-1040 |  | Kerbstone submission | 2d | 2026-02-25 | 2026-02-26 | SDR-2-ENG-APP-C-1110, SDR-2-ENG-APP-M-1140 | 4d |
| SDR-2-PRO-MSS-C-1050 |  | Interlock Tiles submission | 2d | 2026-02-25 | 2026-02-26 | SDR-2-ENG-APP-C-1070, SDR-2-ENG-APP-C-1130 | 4d |
| SDR-2-PRO-MSS-C-1060 |  | Traffic Signage submission | 2d | 2026-02-25 | 2026-02-26 | SDR-2-ENG-APP-C-1190 | 4d |
| SDR-2-PRO-MSS-C-1070 |  | Construction material submission | 2d | 2026-02-25 | 2026-02-26 | SDR-2-ENG-APP-C-1080, SDR-2-ENG-APP-M-1080 | 4d |
| SDR-2-PRO-MSS-C-1080 |  | Fence for Electrical works submission | 2d | 2026-02-25 | 2026-02-26 | SDR-2-ENG-APP-E-1150, SDR-2-PRO-MSS-C-1070 SS, SDR-2-PREL-1100 | 4d |
| SDR-2-PRO-MSS-C-1090 |  | Protection Bollards for CCTV Pole submission | 2d | 2026-02-25 | 2026-02-26 | SDR-2-ENG-APP-E-1250 | 4d |
| SDR-2-PRO-MSS-C-1100 |  | Protection (Guard rail) for Fire hydrant submission | 2d | 2026-02-25 | 2026-02-26 | SDR-2-ENG-APP-E-1240, SDR-2-PRO-MSS-C-1090 SS, SDR-2-PREL-1100 | 4d |
|  | 4 | **Electrical** |  | 2026-02-25 | 2026-02-26 |  |  |
| SDR-2-PRO-MSS-E-1000 |  | Termination Kits & Joints submission | 2d | 2026-02-25 | 2026-02-26 | SDR-2-ENG-APP-E-1080 | 4d |
| SDR-2-PRO-MSS-E-1010 |  | UPVC Ducts & HDPE Ducts for Telecom network submission | 2d | 2026-02-25 | 2026-02-26 | SDR-2-ENG-APP-E-1010 | 4d |
| SDR-2-PRO-MSS-E-1020 |  | Grounding System submission | 2d | 2026-02-25 | 2026-02-26 | SDR-2-ENG-APP-E-1000 | 4d |
|  | 5 | **CCTV** |  | 2026-02-25 | 2026-02-26 |  |  |
| SDR-2-PRO-MSS-E-1030 |  | PECD Ducts for CCTV network submission | 2d | 2026-02-25 | 2026-02-26 | SDR-2-ENG-APP-E-1240 | 4d |
|  | 1 | **Long Lead Items** |  | 2026-02-25 | 2026-02-28 |  |  |
|  | 2 | **Mechanical** |  | 2026-02-25 | 2026-02-26 |  |  |
| SDR-2-PRO-MSL-M-1000 |  | GRP Pipes & UPVC Pipes &Fittings submission | 2d | 2026-02-25 | 2026-02-26 | SDR-2-ENG-APP-M-1000, SDR-2-ENG-APP-C-1030, SDR-2-ENG-APP-C-1040, SDR-2-ENG-APP-M-1020, SDR-2-ENG-APP-M-1030, SDR-2-ENG-APP-M-1050, SDR-2-ENG-APP-M-1070, SDR-2-ENG-APP-M-1160, SDR-2-ENG-APP-M-1170, SDR-2-ENG-APP-M-1180, SDR-2-ENG-APP-M-1190, SDR-2-ENG-APP-M-1200, SDR-2-ENG-APP-M-1210, SDR-2-ENG-APP-M-1220, SDR-2-ENG-APP-M-1230 | 1d |
| SDR-2-PRO-MSL-M-1010 |  | HDPE Pipes & Fittings submission | 2d | 2026-02-25 | 2026-02-26 | SDR-2-ENG-APP-M-1000, SDR-2-ENG-APP-M-1110, SDR-2-ENG-APP-M-1120, SDR-2-ENG-APP-M-1150, SDR-2-ENG-APP-M-1240, SDR-2-ENG-APP-M-1250, SDR-2-ENG-APP-M-1260, SDR-2-ENG-APP-M-1270, SDR-2-ENG-APP-M-1280 SS, SDR-2-ENG-APP-M-1300 SS, SDR-2-ENG-APP-M-1310 SS, SDR-2-ENG-APP-M-1320 SS | 4d |
| SDR-2-PRO-MSL-M-1020 |  | Valves submission | 2d | 2026-02-25 | 2026-02-26 | SDR-2-ENG-APP-M-1040 | 4d |
| SDR-2-PRO-MSL-M-1030 |  | Manhole submission | 2d | 2026-02-25 | 2026-02-26 | SDR-2-ENG-APP-M-1100 | 4d |
| SDR-2-PRO-MSL-M-1040 |  | Catch Basin submission | 2d | 2026-02-25 | 2026-02-26 | SDR-2-ENG-APP-M-1130 | 4d |
| SDR-2-PRO-MSL-M-1050 |  | Manhole, Catch basin and Valve box Cover submission | 2d | 2026-02-25 | 2026-02-26 | SDR-2-ENG-APP-M-1100 | 4d |
| SDR-2-PRO-MSL-M-1060 |  | Fire Hydrant submission | 2d | 2026-02-25 | 2026-02-26 | SDR-2-ENG-APP-M-1060 | 4d |
| SDR-2-PRO-MSL-M-1070 |  | Valve of Fire Hydrant submission | 2d | 2026-02-25 | 2026-02-26 | SDR-2-ENG-APP-M-1090 | 4d |
|  | 3 | **Electrical** |  | 2026-02-25 | 2026-02-28 |  |  |
| SDR-2-PRO-MSL-E-1000 |  | MV Cables submission | 2d | 2026-02-25 | 2026-02-26 | SDR-2-ENG-APP-E-1000, SDR-2-ENG-APP-E-1020, SDR-2-ENG-APP-E-1050 | 4d |
| SDR-2-PRO-MSL-E-1010 |  | LV Cables submission | 2d | 2026-02-25 | 2026-02-26 | SDR-2-ENG-APP-E-1040, SDR-2-ENG-APP-E-1030, SDR-2-ENG-APP-E-1100, SDR-2-ENG-APP-E-1160, SDR-2-ENG-APP-E-1170, SDR-2-ENG-APP-E-1190, SDR-2-ENG-APP-E-1210 | 4d |
| SDR-2-PRO-MSL-E-1020 |  | Street Lighting Poles submission | 2d | 2026-02-25 | 2026-02-26 | SDR-2-ENG-APP-E-1110 | 4d |
| SDR-2-PRO-MSL-E-1030 |  | Street Lighting Fixtures submission | 2d | 2026-02-25 | 2026-02-26 | SDR-2-ENG-APP-E-1080, SDR-2-ENG-APP-E-1090, SDR-2-ENG-APP-E-1130 | 4d |
| SDR-2-PRO-MSL-E-1040 |  | DrawPits for Lighting submission | 2d | 2026-02-25 | 2026-02-26 | SDR-2-ENG-APP-E-1080 | 4d |
| SDR-2-PRO-MSL-E-1050 |  | Concrete Manholes & DrawPits for Telecom Network submission | 2d | 2026-02-25 | 2026-02-26 | SDR-2-ENG-APP-E-1180, SDR-2-ENG-APP-E-1200 | 4d |
| SDR-2-PRO-MSL-E-1060 |  | Switchgears - (RMUs) submission | 2d | 2026-02-25 | 2026-02-26 | SDR-2-ENG-APP-E-1040 | 4d |
| SDR-2-PRO-MSL-E-1070 |  | Unit Substation submission | 2d | 2026-02-25 | 2026-02-26 | SDR-2-ENG-APP-E-1040, SDR-2-ENG-APP-E-1070 | 4d |
| SDR-2-PRO-MSL-E-1080 |  | Lighting Panels submission | 2d | 2026-02-25 | 2026-02-26 | SDR-2-ENG-APP-E-1080 | 4d |
| SDR-2-PRO-MSL-E-1090 |  | KWH Meter with mounting frame submission | 2d | 2026-02-25 | 2026-02-26 | SDR-2-ENG-APP-E-1120 | 4d |
| SDR-2-PRO-MSL-E-1100 |  | Main Feeder Pillar submission | 2d | 2026-02-25 | 2026-02-26 | SDR-2-ENG-APP-E-1140 | 4d |
| SDR-2-PRO-MSL-E-1110 |  | CCTV Poles including all hardwares submission | 2d | 2026-02-25 | 2026-02-26 | SDR-2-ENG-APP-E-1260 | 4d |
| SDR-2-PRO-MSL-E-1120 |  | CCTV Cables "Power" submission | 2d | 2026-02-25 | 2026-02-26 | SDR-2-ENG-APP-E-1220, SDR-2-ENG-APP-E-1270, SDR-2-ENG-APP-E-1060 | 4d |
| SDR-2-PRO-MSL-E-1130 |  | CCTV Cables "CAT6" submission | 2d | 2026-02-25 | 2026-02-26 | SDR-2-ENG-APP-E-1230 | 4d |

| ID | WBS | Task | Duration | Start | Finish | Predecessors | Total float |
| --- | --- | --- | --- | --- | --- | --- | --- |
| SDR-2-PRO-MSL-E-1140 |  | Racks and Patch panels submission | 2d | 2026-02-25 | 2026-02-26 | SDR-2-ENG-APP-E-1280 | 4d |
| SDR-2-PRO-MSL-E-1150 |  | CCTV System,Servers & WorkStations submission | 2d | 2026-02-25 | 2026-02-26 | SDR-2-ENG-APP-E-1230 | 4d |
| SDR-2-PRO-MSL-E-1160 |  | Professional 55" Video wall at control room submission | 2d | 2026-02-25 | 2026-02-26 | SDR-2-ENG-APP-E-1140 | 23d |
| SDR-2-PRO-MSL-E-1170 |  | CCTV Switches submission | 3d | 2026-02-25 | 2026-02-28 | SDR-2-ENG-APP-E-1220 | 23d |
| SDR-2-PRO-MSL-E-1180 |  | CCTV Wireless P2P bridges submission | 2d | 2026-02-25 | 2026-02-26 | SDR-2-ENG-APP-E-1250 | 4d |
| SDR-2-PRO-MSL-E-1190 |  | CCTV UPS submission | 2d | 2026-02-25 | 2026-02-26 | SDR-2-ENG-APP-E-1220 | 4d |
| SDR-2-PRO-MSL-E-1200 |  | CCTV Solar System submission | 2d | 2026-02-25 | 2026-02-26 | SDR-2-ENG-APP-E-1280 | 20d |
|  | 6 | **Materials Approval** |  | 2026-02-28 | 2026-03-05 |  |  |
|  | 2 | **Short Lead Items** |  | 2026-02-28 | 2026-03-05 |  |  |
|  | 1 | **Civil** |  | 2026-02-28 | 2026-03-05 |  |  |
| SDR-2-PRO-MAS-C-1000 |  | Earth works material Approve | 3d | 2026-02-28 | 2026-03-02 | SDR-2-PRO-MSS-C-1000 | 1d |
| SDR-2-PRO-MAS-C-1010 |  | Ready mix concrete Approve | 3d | 2026-02-28 | 2026-03-02 | SDR-2-PRO-MSS-C-1010 | 4d |
| SDR-2-PRO-MAS-C-1030 |  | Road Marking Approve | 3d | 2026-02-28 | 2026-03-02 | SDR-2-PRO-MSS-C-1030 | 4d |
| SDR-2-PRO-MAS-C-1040 |  | Kerbstone Approve | 3d | 2026-02-28 | 2026-03-02 | SDR-2-PRO-MSS-C-1040 | 4d |
| SDR-2-PRO-MAS-C-1050 |  | Interlock Tiles Approve | 3d | 2026-02-28 | 2026-03-02 | SDR-2-PRO-MSS-C-1050 | 4d |
| SDR-2-PRO-MAS-C-1060 |  | Traffic Signage Approve | 3d | 2026-02-28 | 2026-03-02 | SDR-2-PRO-MSS-C-1060 | 4d |
| SDR-2-PRO-MAS-C-1070 |  | Construction material Approve | 3d | 2026-02-28 | 2026-03-02 | SDR-2-PRO-MSS-C-1070 | 4d |
| SDR-2-PRO-MAS-C-1080 |  | Fence for Electrical works Approve | 3d | 2026-02-28 | 2026-03-02 | SDR-2-PRO-MSS-C-1080 | 4d |
| SDR-2-PRO-MAS-C-1090 |  | Protection Bollards for CCTV Pole Approve | 3d | 2026-02-28 | 2026-03-02 | SDR-2-PRO-MSS-C-1090 | 4d |
| SDR-2-PRO-MAS-C-1100 |  | Protection (Guard rail) for Fire hydrant Approve | 3d | 2026-02-28 | 2026-03-02 | SDR-2-PRO-MSS-C-1100 | 4d |
| SDR-2-PRO-MAS-C-1020 |  | Asphalt Mix Approve | 3d | 2026-03-03 | 2026-03-05 | SDR-2-PRO-MSS-C-1020, SDR-2-PRO-MAS-C-1000 | 1d |
|  | 3 | **Electrical** |  | 2026-02-28 | 2026-03-02 |  |  |
| SDR-2-PRO-MAS-E-1000 |  | Termination Kits & Joints Approve | 3d | 2026-02-28 | 2026-03-02 | SDR-2-PRO-MSS-E-1000 | 4d |
| SDR-2-PRO-MAS-E-1010 |  | UPVC Ducts & HDPE Ducts for Telecom network Approve | 3d | 2026-02-28 | 2026-03-02 | SDR-2-PRO-MSS-E-1010 | 4d |
| SDR-2-PRO-MAS-E-1020 |  | Grounding System Approve | 3d | 2026-02-28 | 2026-03-02 | SDR-2-PRO-MSS-E-1020 | 4d |
| SDR-2-PRO-MAS-E-1030 |  | PECD Ducts for CCTV network Approve | 3d | 2026-02-28 | 2026-03-02 | SDR-2-PRO-MSS-E-1030 | 4d |
|  | 1 | **Long Lead Items** |  | 2026-02-28 | 2026-03-05 |  |  |
|  | 2 | **Mechanical** |  | 2026-02-28 | 2026-03-05 |  |  |
| SDR-2-PRO-MAL-M-1000 |  | GRP Pipes & UPVC Pipes & Fittings Approve | 3d | 2026-02-28 | 2026-03-02 | SDR-2-PRO-MSL-M-1000 | 1d |
| SDR-2-PRO-MAL-M-1010 |  | HDPE Pipes & Fittings Approve | 3d | 2026-02-28 | 2026-03-02 | SDR-2-PRO-MSL-M-1010 | 4d |
| SDR-2-PRO-MAL-M-1020 |  | Valves Approve | 3d | 2026-02-28 | 2026-03-02 | SDR-2-PRO-MSL-M-1020 | 4d |
| SDR-2-PRO-MAL-M-1040 |  | Catch Basin Approve | 3d | 2026-02-28 | 2026-03-02 | SDR-2-PRO-MSL-M-1040 | 4d |
| SDR-2-PRO-MAL-M-1050 |  | Manhole, Catch basin and Valve box Cover Approve | 3d | 2026-02-28 | 2026-03-02 | SDR-2-PRO-MSL-M-1050 | 4d |
| SDR-2-PRO-MAL-M-1060 |  | Fire Hydrant Approve | 3d | 2026-02-28 | 2026-03-02 | SDR-2-PRO-MSL-M-1060 | 4d |
| SDR-2-PRO-MAL-M-1070 |  | Valve of Fire Hydrant Approve | 3d | 2026-02-28 | 2026-03-02 | SDR-2-PRO-MSL-M-1070 | 4d |
| SDR-2-PRO-MAL-M-1030 |  | Manhole Approve | 3d | 2026-03-03 | 2026-03-05 | SDR-2-PRO-MSL-M-1030, SDR-2-PRO-MAL-M-1000 | 1d |
|  | 3 | **Electrical** |  | 2026-02-28 | 2026-03-05 |  |  |
| SDR-2-PRO-MAL-E-1000 |  | MV Cables Approve | 3d | 2026-02-28 | 2026-03-02 | SDR-2-PRO-MSL-E-1000 | 4d |
| SDR-2-PRO-MAL-E-1010 |  | LV Cables Approve | 3d | 2026-02-28 | 2026-03-02 | SDR-2-PRO-MSL-E-1010 | 4d |
| SDR-2-PRO-MAL-E-1020 |  | Street Lighting Poles Approve | 3d | 2026-02-28 | 2026-03-02 | SDR-2-PRO-MSL-E-1020 | 4d |
| SDR-2-PRO-MAL-E-1030 |  | Street Lighting Fixtures Approve | 3d | 2026-02-28 | 2026-03-02 | SDR-2-PRO-MSL-E-1030 | 4d |
| SDR-2-PRO-MAL-E-1040 |  | DrawPits for Lighting Approve | 3d | 2026-02-28 | 2026-03-02 | SDR-2-PRO-MSL-E-1040 | 4d |
| SDR-2-PRO-MAL-E-1050 |  | Concrete Manholes & DrawPits for Telecom Network Approve | 3d | 2026-02-28 | 2026-03-02 | SDR-2-PRO-MSL-E-1050 | 4d |
| SDR-2-PRO-MAL-E-1060 |  | Switchgears - (RMUs) Approve | 3d | 2026-02-28 | 2026-03-02 | SDR-2-PRO-MSL-E-1060 | 4d |
| SDR-2-PRO-MAL-E-1070 |  | Unit Substation Approve | 3d | 2026-02-28 | 2026-03-02 | SDR-2-PRO-MSL-E-1070 | 4d |
| SDR-2-PRO-MAL-E-1080 |  | Lighting Panels Approve | 3d | 2026-02-28 | 2026-03-02 | SDR-2-PRO-MSL-E-1080 | 4d |
| SDR-2-PRO-MAL-E-1090 |  | KWH Meter with mounting frame Approve | 3d | 2026-02-28 | 2026-03-02 | SDR-2-PRO-MSL-E-1090 | 4d |
| SDR-2-PRO-MAL-E-1100 |  | Main Feeder Pillar Approve | 3d | 2026-02-28 | 2026-03-02 | SDR-2-PRO-MSL-E-1100 | 4d |
| SDR-2-PRO-MAL-E-1110 |  | CCTV Poles including all hardwares Approve | 3d | 2026-02-28 | 2026-03-02 | SDR-2-PRO-MSL-E-1110 | 4d |
| SDR-2-PRO-MAL-E-1120 |  | CCTV Cables "Power" Approve | 3d | 2026-02-28 | 2026-03-02 | SDR-2-PRO-MSL-E-1120 | 4d |
| SDR-2-PRO-MAL-E-1130 |  | CCTV Cables "CAT6" Approve | 3d | 2026-02-28 | 2026-03-02 | SDR-2-PRO-MSL-E-1130 | 4d |
| SDR-2-PRO-MAL-E-1140 |  | Racks and Patch panels Approve Approve | 3d | 2026-02-28 | 2026-03-02 | SDR-2-PRO-MSL-E-1140 | 4d |
| SDR-2-PRO-MAL-E-1150 |  | CCTV System,Servers & WorkStations Approve | 3d | 2026-02-28 | 2026-03-02 | SDR-2-PRO-MSL-E-1150 | 4d |
| SDR-2-PRO-MAL-E-1160 |  | Professional 55" Video wall at control room Approve | 3d | 2026-02-28 | 2026-03-02 | SDR-2-PRO-MSL-E-1160 | 23d |
| SDR-2-PRO-MAL-E-1170 |  | CCTV Switches Approve | 3d | 2026-02-28 | 2026-03-02 | SDR-2-PRO-MSL-E-1170 SS+2d | 23d |
| SDR-2-PRO-MAL-E-1180 |  | CCTV Wireless P2P bridges Approve | 3d | 2026-02-28 | 2026-03-02 | SDR-2-PRO-MSL-E-1180 | 4d |
| SDR-2-PRO-MAL-E-1190 |  | CCTV UPS Approve | 3d | 2026-02-28 | 2026-03-02 | SDR-2-PRO-MSL-E-1190 | 4d |
| SDR-2-PRO-MAL-E-1200 |  | CCTV Solar System Approve | 3d | 2026-03-03 | 2026-03-05 | SDR-2-PRO-MSL-E-1200 FS+3d | 20d |
|  | PR | **Procurement** |  | 2026-03-03 | 2026-11-21 |  |  |
|  | 3 | **Purchase Order** |  | 2026-03-03 | 2026-09-07 |  |  |
|  | 1 | **Civil** |  | 2026-03-03 | 2026-06-13 |  |  |
| SDR-2-PRO-PO-C-1010 |  | Ready mix concrete PO | 19d | 2026-03-03 | 2026-03-29 | SDR-2-PRO-MAS-C-1010 | 54d |
| SDR-2-PRO-PO-C-1070 |  | Construction material PO | 12d | 2026-03-03 | 2026-03-16 | SDR-2-PRO-MAS-C-1070 | 24d |
| SDR-2-PRO-PO-C-1000 |  | Earth works material PO | 13d | 2026-03-05 | 2026-03-19 | SDR-2-PRO-MAS-C-1000 FS+2d | 6d |
| SDR-2-PRO-PO-C-1020 |  | Asphalt Mix PO | 17d | 2026-03-07 | 2026-03-30 | SDR-2-PRO-MAS-C-1020, SDR-2-MILS-1040, SDR-2-MILS-1090 | 20d |
| SDR-2-PRO-PO-C-1030 |  | Kerbstone PO | 12d | 2026-03-29 | 2026-04-11 | SDR-2-PRO-MAS-C-1040, SDR-2-MILS-1000 FS+66d | 7d |
| SDR-2-PRO-PO-C-1040 |  | Road Marking PO | 14d | 2026-04-06 | 2026-04-21 | SDR-2-PRO-MAS-C-1030, SDR-2-MILS-1000 FS+73d | 23d |
| SDR-2-PRO-PO-C-1050 |  | Interlock Tiles PO | 11d | 2026-04-19 | 2026-04-30 | SDR-2-PRO-MAS-C-1050, SDR-2-MILS-1000 FS+84d | 169d |
| SDR-2-PRO-PO-C-1060 |  | Traffic Signage PO | 13d | 2026-04-28 | 2026-05-12 | SDR-2-PRO-MAS-C-1060, SDR-2-MILS-1000 FS+92d | 32d |
| SDR-2-PRO-PO-C-1080 |  | Fence for Electrical works PO | 13d | 2026-04-28 | 2026-05-12 | SDR-2-PRO-MAS-C-1080, SDR-2-MILS-1000 FS+92d | 30d |

| ID | WBS | Task | Duration | Start | Finish | Predecessors | Total float |
| --- | --- | --- | --- | --- | --- | --- | --- |
| SDR-2-PRO-PO-C-1100 |  | Protection (Guard rail) for Fire hydrant PO | 13d | 2026-05-11 | 2026-05-25 | SDR-2-PRO-MAS-C-1100, SDR-2-MILS-1000 FS+103d | 38d |
| SDR-2-PRO-PO-C-1090 |  | Protection Bollards for CCTV Pole PO | 13d | 2026-05-25 | 2026-06-13 | SDR-2-PRO-MAS-C-1090, SDR-2-MILS-1000 FS+115d | 33d |
|  | 2 | **Mechanical** |  | 2026-03-10 | 2026-06-04 |  |  |
| SDR-2-PRO-PO-M-1000 |  | GRP Pipes & UPVC Pipes &Fittings PO | 16d | 2026-03-10 | 2026-04-01 | SDR-2-PRO-MAL-M-1000, SDR-2-MILS-1000 FS+54d | 12d |
| SDR-2-PRO-PO-M-1030 |  | Manhole PO | 13d | 2026-03-31 | 2026-04-14 | SDR-2-PRO-MAL-M-1030, SDR-2-MILS-1000 FS+68d | 12d |
| SDR-2-PRO-PO-M-1010 |  | HDPE Pipes & Fittings PO | 13d | 2026-04-08 | 2026-04-22 | SDR-2-PRO-MAL-M-1010, SDR-2-MILS-1000 FS+75d | 5d |
| SDR-2-PRO-PO-M-1020 |  | Valves PO | 13d | 2026-04-13 | 2026-04-27 | SDR-2-PRO-MAL-M-1020, SDR-2-MILS-1000 FS+79d | 6d |
| SDR-2-PRO-PO-M-1040 |  | Catch Basin PO | 13d | 2026-04-22 | 2026-05-06 | SDR-2-PRO-MAL-M-1040, SDR-2-MILS-1000 FS+87d | 3d |
| SDR-2-PRO-PO-M-1050 |  | Manhole, Catch basin and Valve box Cover PO | 13d | 2026-05-04 | 2026-05-18 | SDR-2-PRO-MAL-M-1050, SDR-2-MILS-1000 FS+97d | 0d |
| SDR-2-PRO-PO-M-1060 |  | Fire Hydrant PO | 14d | 2026-05-16 | 2026-06-04 | SDR-2-PRO-MAL-M-1060, SDR-2-MILS-1000 FS+107d | 10d |
| SDR-2-PRO-PO-M-1070 |  | Valve of Fire Hydrant PO | 14d | 2026-05-16 | 2026-06-04 | SDR-2-PRO-MAL-M-1070, SDR-2-MILS-1000 FS+107d | 10d |
|  | 3 | **Electrical** |  | 2026-03-03 | 2026-09-07 |  |  |
| SDR-2-PRO-PO-E-1060 |  | UPVC Ducts & HDPE Ducts for Telecom network PO | 18d | 2026-03-03 | 2026-03-28 | SDR-2-MILS-1000 FS+48d, SDR-2-PRO-MAS-E-1010 | 10d |
| SDR-2-PRO-PO-E-1000 |  | MV Cables PO | 17d | 2026-03-12 | 2026-04-05 | SDR-2-PRO-MAL-E-1000, SDR-2-MILS-1000 FS+56d | 9d |
| SDR-2-PRO-PO-E-1010 |  | Termination Kits & Joints PO | 17d | 2026-03-12 | 2026-04-05 | SDR-2-PRO-MAS-E-1000, SDR-2-MILS-1000 FS+56d | 12d |
| SDR-2-PRO-PO-E-1070 |  | Concrete Manholes & DrawPits for Telecom Network PO | 13d | 2026-03-25 | 2026-04-08 | SDR-2-PRO-MAL-E-1050, SDR-2-MILS-1000 FS+63d | 10d |
| SDR-2-PRO-PO-E-1020 |  | LV Cables PO | 11d | 2026-04-02 | 2026-04-14 | SDR-2-PRO-MAL-E-1010, SDR-2-MILS-1000 FS+70d | 14d |
| SDR-2-PRO-PO-E-1080 |  | Grounding System PO | 13d | 2026-04-08 | 2026-04-22 | SDR-2-PRO-MAS-E-1020, SDR-2-MILS-1000 FS+75d | 8d |
| SDR-2-PRO-PO-E-1030 |  | Street Lighting Poles PO | 13d | 2026-04-14 | 2026-04-28 | SDR-2-PRO-MAL-E-1020, SDR-2-MILS-1000 FS+80d | 5d |
| SDR-2-PRO-PO-E-1090 |  | Switchgears - (RMUs) PO | 13d | 2026-04-20 | 2026-05-04 | SDR-2-PRO-MAL-E-1060, SDR-2-MILS-1000 FS+85d | 0d |
| SDR-2-PRO-PO-E-1100 |  | Unit Substation PO | 13d | 2026-04-22 | 2026-05-06 | SDR-2-PRO-MAL-E-1070, SDR-2-MILS-1000 FS+87d | 4d |
| SDR-2-PRO-PO-E-1040 |  | Street Lighting Fixtures PO | 13d | 2026-04-28 | 2026-05-12 | SDR-2-PRO-MAL-E-1030, SDR-2-MILS-1000 FS+92d | 7d |
| SDR-2-PRO-PO-E-1110 |  | Lighting Panels PO | 13d | 2026-05-06 | 2026-05-20 | SDR-2-PRO-MAL-E-1080, SDR-2-MILS-1000 FS+99d | 19d |
| SDR-2-PRO-PO-E-1120 |  | KWH Meter with mounting frame PO | 13d | 2026-05-06 | 2026-05-20 | SDR-2-PRO-MAL-E-1090, SDR-2-MILS-1000 FS+99d | 5d |
| SDR-2-PRO-PO-E-1130 |  | Main Feeder Pillar PO | 13d | 2026-05-06 | 2026-05-20 | SDR-2-PRO-MAL-E-1100, SDR-2-MILS-1000 FS+99d | 13d |
| SDR-2-PRO-PO-E-1050 |  | DrawPits for Lighting PO | 15d | 2026-05-12 | 2026-06-02 | SDR-2-PRO-MAL-E-1040, SDR-2-MILS-1000 FS+104d | 0d |
| SDR-2-PRO-PO-E-1150 |  | CCTV Poles including all hardwares PO | 14d | 2026-05-18 | 2026-06-07 | SDR-2-PRO-MAL-E-1110, SDR-2-MILS-1000 FS+109d | 20d |
| SDR-2-PRO-PO-E-1140 |  | PECD Ducts for CCTV network PO | 14d | 2026-05-20 | 2026-06-09 | SDR-2-PRO-MAS-E-1030, SDR-2-MILS-1000 FS+111d | 15d |
| SDR-2-PRO-PO-E-1160 |  | CCTV Cables "Power" PO | 13d | 2026-05-25 | 2026-06-13 | SDR-2-PRO-MAL-E-1120, SDR-2-MILS-1000 FS+115d | 15d |
| SDR-2-PRO-PO-E-1170 |  | CCTV Cables "CAT6" PO | 13d | 2026-05-25 | 2026-06-13 | SDR-2-PRO-MAL-E-1130, SDR-2-MILS-1000 FS+115d | 3d |
| SDR-2-PRO-PO-E-1180 |  | Racks and Patch panels PO | 13d | 2026-06-10 | 2026-06-24 | SDR-2-PRO-MAL-E-1140, SDR-2-MILS-1000 FS+125d | 18d |
| SDR-2-PRO-PO-E-1190 |  | CCTV System,Servers & WorkStations PO | 13d | 2026-06-24 | 2026-07-08 | SDR-2-PRO-MAL-E-1150, SDR-2-MILS-1000 FS+137d | 20d |
| SDR-2-PRO-PO-E-1200 |  | Professional 55" Video wall at control room PO | 13d | 2026-07-08 | 2026-07-22 | SDR-2-PRO-MAL-E-1160, SDR-2-MILS-1000 FS+149d | 18.2d |
| SDR-2-PRO-PO-E-1210 |  | CCTV Switches PO | 13d | 2026-07-22 | 2026-08-05 | SDR-2-PRO-MAL-E-1170, SDR-2-MILS-1000 FS+161d | 17d |
| SDR-2-PRO-PO-E-1220 |  | CCTV Wireless P2P bridges PO | 13d | 2026-08-01 | 2026-08-15 | SDR-2-PRO-MAL-E-1180, SDR-2-MILS-1000 FS+169d | 9d |
| SDR-2-PRO-PO-E-1230 |  | CCTV UPS PO | 13d | 2026-08-09 | 2026-08-23 | SDR-2-PRO-MAL-E-1190, SDR-2-MILS-1000 FS+176d | 10d |
| SDR-2-PRO-PO-E-1240 |  | CCTV Solar System PO | 13d | 2026-08-24 | 2026-09-07 | SDR-2-PRO-MAL-E-1200, SDR-2-MILS-1000 FS+189d | 14d |
|  | 1 | **Delivery to Site** |  | 2026-04-10 | 2026-11-11 |  |  |
|  | 2 | **Short Lead Items Delivery** |  | 2026-04-10 | 2026-10-04 |  |  |
|  | 1 | **Civil** |  | 2026-04-10 | 2026-10-04 |  |  |
| SDR-2-PRO-DES-C-1000 |  | Earth works material Delivery | 50d | 2026-04-10 | 2026-06-02 | SDR-2-PRO-PO-C-1000 FS+14d | 7d |
| SDR-2-PRO-DES-C-1070 |  | Construction material Delivery | 110d | 2026-04-14 | 2026-08-05 | SDR-2-PRO-PO-C-1070 FS+20d | 28d |
| SDR-2-PRO-DES-C-1010 |  | Ready mix concrete Delivery | 118d | 2026-05-04 | 2026-09-02 | SDR-2-PRO-PO-C-1010 FS+30d | 64d |
| SDR-2-PRO-DES-C-1030 |  | Kerbstone Delivery | 60d | 2026-05-05 | 2026-07-07 | SDR-2-PRO-PO-C-1030 FS+20d | 8d |
| SDR-2-PRO-DES-C-1050 |  | Interlock Tiles Delivery | 40d | 2026-05-11 | 2026-06-23 | SDR-2-PRO-PO-C-1050 FS+8d | 198d |
| SDR-2-PRO-DES-C-1080 |  | Fence for Electrical works Delivery | 29d | 2026-06-05 | 2026-07-03 | SDR-2-PRO-PO-C-1080 FS+16d | 35d |
| SDR-2-PRO-DES-C-1040 |  | Road Marking Delivery | 90d | 2026-06-08 | 2026-09-05 | SDR-2-PRO-PO-C-1040 FS+36d | 27d |
| SDR-2-PRO-DES-C-1060 |  | Traffic Signage Manufacture and Delivery | 20d | 2026-06-11 | 2026-06-30 | SDR-2-PRO-PO-C-1060 FS+21d | 38d |
| SDR-2-PRO-DES-C-1090 |  | Protection Bollards for CCTV Pole Delivery | 17d | 2026-06-14 | 2026-06-30 | SDR-2-PRO-PO-C-1090 | 38d |
| SDR-2-PRO-DES-C-1100 |  | Protection (Guard rail) for Fire hydrant Delivery | 60d | 2026-06-14 | 2026-08-12 | SDR-2-PRO-PO-C-1100 FS+12d | 44d |
| SDR-2-PRO-DES-C-1020 |  | Asphalt Mix Delivery | 98d | 2026-06-28 | 2026-10-04 | SDR-2-PRO-PO-C-1020 FS+72d | 23d |
|  | 3 | **Electrical** |  | 2026-04-20 | 2026-07-28 |  |  |
| SDR-2-PRO-DES-E-1000 |  | UPVC Ducts & HDPE Ducts for Telecom network M Delivery | 35d | 2026-04-20 | 2026-05-24 | SDR-2-PRO-PO-E-1060 FS+19d | 11d |
| SDR-2-PRO-DES-E-1010 |  | Grounding System Delivery | 37d | 2026-05-07 | 2026-06-16 | SDR-2-PRO-PO-E-1080 FS+12d | 10d |
| SDR-2-PRO-DES-E-1020 |  | PECD Ducts for CCTV network Delivery | 37d | 2026-06-22 | 2026-07-28 | SDR-2-PRO-PO-E-1140 FS+10d | 17d |
|  | 5 | **Long Lead Items Delivery** |  | 2026-05-01 | 2026-11-11 |  |  |
|  | 3 | **Electrical** |  | 2026-05-04 | 2026-11-11 |  |  |
| SDR-2-PRO-DEL-E-1000 |  | MV Cables Delivery | 70d | 2026-05-04 | 2026-07-16 | SDR-2-PRO-PO-E-1000 FS+24d | 10d |
| SDR-2-PRO-DEL-E-1010 |  | LV Cables Delivery | 70d | 2026-05-11 | 2026-07-23 | SDR-2-PRO-PO-E-1020 FS+22d | 17d |
| SDR-2-PRO-DEL-E-1210 |  | Termination Kits & Joints Delivery | 60d | 2026-05-11 | 2026-07-13 | SDR-2-PRO-PO-E-1010 FS+30d | 14d |
| SDR-2-PRO-DEL-E-1050 |  | Concrete Manholes & DrawPits for Telecom Network Delivery | 65d | 2026-05-12 | 2026-07-19 | SDR-2-PRO-PO-E-1070 FS+28d | 12d |
| SDR-2-PRO-DEL-E-1060 |  | Switchgears - (RMUs) Delivery | 50d | 2026-05-14 | 2026-07-06 | SDR-2-PRO-PO-E-1090 FS+8d | 0d |
| SDR-2-PRO-DEL-E-1070 |  | Unit Substation Delivery | 65d | 2026-05-14 | 2026-07-21 | SDR-2-PRO-PO-E-1100 FS+6d | 5d |
| SDR-2-PRO-DEL-E-1090 |  | KWH Meter with mounting frame Delivery | 50d | 2026-05-21 | 2026-07-13 | SDR-2-PRO-PO-E-1120 | 6d |
| SDR-2-PRO-DEL-E-1030 |  | Street Lighting Fixtures Delivery | 70d | 2026-05-24 | 2026-08-05 | SDR-2-PRO-PO-E-1040 FS+9d | 9d |
| SDR-2-PRO-DEL-E-1020 |  | Street Lighting Poles Delivery | 70d | 2026-05-25 | 2026-08-06 | SDR-2-PRO-PO-E-1030 FS+22d | 6d |
| SDR-2-PRO-DEL-E-1100 |  | Main Feeder Pillar Manufacture and Delivery | 50d | 2026-06-09 | 2026-07-28 | SDR-2-PRO-PO-E-1130 FS+12d | 15d |
| SDR-2-PRO-DEL-E-1130 |  | CCTV Cables "CAT6" Delivery | 45d | 2026-06-14 | 2026-07-28 | SDR-2-PRO-PO-E-1170 | 3d |
| SDR-2-PRO-DEL-E-1040 |  | DrawPits for Lighting Delivery | 40d | 2026-06-17 | 2026-07-26 | SDR-2-PRO-PO-E-1050 FS+12d | 0d |
| SDR-2-PRO-DEL-E-1110 |  | CCTV Poles including all hardwares Delivery | 65d | 2026-06-17 | 2026-08-20 | SDR-2-PRO-PO-E-1150 FS+8d | 24d |

| ID | WBS | Task | Duration | Start | Finish | Predecessors | Total float |
| --- | --- | --- | --- | --- | --- | --- | --- |
| SDR-2-PRO-DEL-E-1080 |  | Lighting Panels Delivery | 65d | 2026-06-18 | 2026-08-21 | SDR-2-PRO-PO-E-1110 FS+20d | 23d |
| SDR-2-PRO-DEL-E-1120 |  | CCTV Cables "Power" Delivery | 65d | 2026-06-23 | 2026-08-26 | SDR-2-PRO-PO-E-1160 FS+8d | 18d |
| SDR-2-PRO-DEL-E-1140 |  | Racks and Patch panels Delivery | 50d | 2026-07-05 | 2026-08-23 | SDR-2-PRO-PO-E-1180 FS+8d | 21d |
| SDR-2-PRO-DEL-E-1150 |  | CCTV System,Servers & WorkStations Delivery | 50d | 2026-07-19 | 2026-09-06 | SDR-2-PRO-PO-E-1190 FS+8d | 23d |
| SDR-2-PRO-DEL-E-1160 |  | Professional 55" Video wall at control room Delivery | 50d | 2026-08-02 | 2026-09-20 | SDR-2-PRO-PO-E-1200 FS+8d | 21.2d |
| SDR-2-PRO-DEL-E-1170 |  | CCTV Switches Delivery | 50d | 2026-08-16 | 2026-10-05 | SDR-2-PRO-PO-E-1210 FS+8d | 19d |
| SDR-2-PRO-DEL-E-1190 |  | CCTV UPS Delivery | 50d | 2026-08-24 | 2026-10-13 | SDR-2-PRO-PO-E-1230 | 11d |
| SDR-2-PRO-DEL-E-1180 |  | CCTV Wireless P2P bridges Delivery | 50d | 2026-08-25 | 2026-10-14 | SDR-2-PRO-PO-E-1220 FS+8d | 10d |
| SDR-2-PRO-DEL-E-1200 |  | CCTV Solar System Delivery | 55d | 2026-09-17 | 2026-11-11 | SDR-2-PRO-PO-E-1240 FS+8d | 17d |
|  | 2 | **Mechanical** |  | 2026-05-01 | 2026-09-01 |  |  |
| SDR-2-PRO-DEL-M-1000 |  | GRP Pipes & UPVC Pipes &Fittings Delivery | 48d | 2026-05-01 | 2026-06-21 | SDR-2-PRO-PO-M-1000 FS+25d | 14d |
| SDR-2-PRO-DEL-M-1030 |  | Manhole Delivery | 48d | 2026-05-17 | 2026-07-07 | SDR-2-PRO-PO-M-1030 FS+27d | 14d |
| SDR-2-PRO-DEL-M-1010 |  | HDPE Pipes & Fittings Delivery | 40d | 2026-05-18 | 2026-06-30 | SDR-2-PRO-PO-M-1010 FS+21d | 6d |
| SDR-2-PRO-DEL-M-1040 |  | Catch Basin Delivery | 50d | 2026-05-19 | 2026-07-11 | SDR-2-PRO-PO-M-1040 FS+10d | 4d |
| SDR-2-PRO-DEL-M-1020 |  | Valves Delivery | 100d | 2026-05-21 | 2026-09-01 | SDR-2-PRO-PO-M-1020 FS+20d | 8d |
| SDR-2-PRO-DEL-M-1050 |  | Manhole, Catch basin and Valve box Cover Delivery | 40d | 2026-06-02 | 2026-07-11 | SDR-2-PRO-PO-M-1050 FS+8d | 0d |
| SDR-2-PRO-DEL-M-1060 |  | Fire Hydrant Delivery | 75d | 2026-06-08 | 2026-08-21 | SDR-2-PRO-PO-M-1060 FS+2d | 11d |
| SDR-2-PRO-DEL-M-1070 |  | Valve of Fire Hydrant Delivery | 75d | 2026-06-08 | 2026-08-21 | SDR-2-PRO-PO-M-1070 FS+2d | 11d |
|  | 4 | **Materials Staging Time** |  | 2026-04-10 | 2026-11-21 |  |  |
|  | 1 | **Civil** |  | 2026-04-10 | 2026-09-09 |  |  |
| SDR-2-PRO-ST-C-1000 |  | Earth works material staging | 4d | 2026-04-10 | 2026-04-13 | SDR-2-PRO-DES-C-1000 SS | 22d |
| SDR-2-PRO-ST-C-1010 |  | Ready mix concrete staging | 4d | 2026-04-10 | 2026-04-13 | SDR-2-PRO-DES-C-1000 SS | 245d |
| SDR-2-PRO-ST-C-1070 |  | Construction material staging | 4d | 2026-05-24 | 2026-05-31 | SDR-2-PRO-DES-C-1070 SS+40d | 119d |
| SDR-2-PRO-ST-C-1050 |  | Interlock Tiles staging | 4d | 2026-06-24 | 2026-06-27 | SDR-2-PRO-DES-C-1050 | 198d |
| SDR-2-PRO-ST-C-1020 |  | Asphalt Mix staging | 4d | 2026-06-28 | 2026-07-01 | SDR-2-PRO-DES-C-1020 SS | 139d |
| SDR-2-PRO-ST-C-1060 |  | Traffic Signage staging | 4d | 2026-07-01 | 2026-07-04 | SDR-2-PRO-DES-C-1060 | 248d |
| SDR-2-PRO-ST-C-1080 |  | Fence for Electrical works staging | 4d | 2026-07-04 | 2026-07-07 | SDR-2-PRO-DES-C-1080 | 94d |
| SDR-2-PRO-ST-C-1090 |  | Protection Bollards for CCTV Pole staging | 4d | 2026-07-05 | 2026-07-08 | SDR-2-PRO-DES-C-1090 FS+4d | 130d |
| SDR-2-PRO-ST-C-1030 |  | Kerbstone staging | 4d | 2026-07-08 | 2026-07-11 | SDR-2-PRO-DES-C-1030 | 100d |
| SDR-2-PRO-ST-C-1100 |  | Protection (Guard rail) for Fire hydrant staging | 4d | 2026-08-13 | 2026-08-16 | SDR-2-PRO-DES-C-1100 | 65d |
| SDR-2-PRO-ST-C-1040 |  | Road Marking staging | 4d | 2026-09-06 | 2026-09-09 | SDR-2-PRO-DES-C-1040 | 149d |
|  | 2 | **Mechanical** |  | 2026-06-22 | 2026-09-11 |  |  |
| SDR-2-PRO-ST-M-1000 |  | GRP Pipes & Fittings staging | 10d | 2026-06-22 | 2026-07-01 | SDR-2-PRO-DEL-M-1000 | 14d |
| SDR-2-PRO-ST-M-1010 |  | HDPE Pipes & Fittings staging | 10d | 2026-07-01 | 2026-07-10 | SDR-2-PRO-DEL-M-1010 | 132d |
| SDR-2-PRO-ST-M-1030 |  | Manhole staging | 10d | 2026-07-08 | 2026-07-17 | SDR-2-PRO-DEL-M-1030 | 164d |
| SDR-2-PRO-ST-M-1040 |  | Catch Basin staging | 10d | 2026-07-12 | 2026-07-21 | SDR-2-PRO-DEL-M-1040 | 136d |
| SDR-2-PRO-ST-M-1050 |  | Manhole, Catch basin and Valve box Cover staging | 10d | 2026-07-12 | 2026-07-21 | SDR-2-PRO-DEL-M-1050 | 0d |
| SDR-2-PRO-ST-M-1060 |  | Fire Hydrant staging | 10d | 2026-08-22 | 2026-08-31 | SDR-2-PRO-DEL-M-1060 | 91d |
| SDR-2-PRO-ST-M-1070 |  | Valve of Fire Hydrant staging | 10d | 2026-08-22 | 2026-08-31 | SDR-2-PRO-DEL-M-1070 | 91d |
| SDR-2-PRO-ST-M-1020 |  | Valves staging | 10d | 2026-09-02 | 2026-09-11 | SDR-2-PRO-DEL-M-1020 | 80d |
|  | 3 | **Electrical** |  | 2026-05-25 | 2026-11-21 |  |  |
| SDR-2-PRO-ST-E-1060 |  | UPVC Ducts & HDPE Ducts for Telecom network staging | 10d | 2026-05-25 | 2026-06-07 | SDR-2-PRO-DES-E-1000 | 165d |
| SDR-2-PRO-ST-E-1130 |  | Main Feeder Pillar staging | 10d | 2026-06-11 | 2026-06-20 | SDR-2-PRO-DEL-E-1100 SS+2d | 94d |
| SDR-2-PRO-ST-E-1080 |  | Grounding System staging | 10d | 2026-06-17 | 2026-06-26 | SDR-2-PRO-DES-E-1010 | 10d |
| SDR-2-PRO-ST-E-1110 |  | Lighting Panels staging | 10d | 2026-06-18 | 2026-06-27 | SDR-2-PRO-DEL-E-1080 SS | 87d |
| SDR-2-PRO-ST-E-1090 |  | Switchgears - (RMUs) staging | 10d | 2026-07-07 | 2026-07-16 | SDR-2-PRO-DEL-E-1060 | 85d |
| SDR-2-PRO-ST-E-1010 |  | Termination Kits & Joints staging | 10d | 2026-07-14 | 2026-07-23 | SDR-2-PRO-DEL-E-1210 | 14d |
| SDR-2-PRO-ST-E-1120 |  | KWH Meter with mounting frame staging | 10d | 2026-07-14 | 2026-07-23 | SDR-2-PRO-DEL-E-1090 | 63d |
| SDR-2-PRO-ST-E-1000 |  | MV Cables staging | 10d | 2026-07-17 | 2026-07-26 | SDR-2-PRO-DEL-E-1000 | 103d |
| SDR-2-PRO-ST-E-1070 |  | Concrete Manholes & DrawPits for Telecom Network staging | 10d | 2026-07-20 | 2026-07-29 | SDR-2-PRO-DEL-E-1050 | 90d |
| SDR-2-PRO-ST-E-1100 |  | Unit Substation staging | 10d | 2026-07-22 | 2026-07-31 | SDR-2-PRO-DEL-E-1070 | 65d |
| SDR-2-PRO-ST-E-1020 |  | LV Cables staging | 10d | 2026-07-27 | 2026-08-05 | SDR-2-PRO-DEL-E-1010 FS+3d | 17d |
| SDR-2-PRO-ST-E-1050 |  | DrawPits for Lighting staging | 10d | 2026-07-27 | 2026-08-05 | SDR-2-PRO-DEL-E-1040 | 17d |
| SDR-2-PRO-ST-E-1140 |  | PECD Ducts for CCTV network staging | 10d | 2026-07-29 | 2026-08-07 | SDR-2-PRO-DES-E-1020 | 25d |
| SDR-2-PRO-ST-E-1170 |  | CCTV Cables "CAT6" staging | 10d | 2026-07-29 | 2026-08-07 | SDR-2-PRO-DEL-E-1130 | 25d |
| SDR-2-PRO-ST-E-1040 |  | Street Lighting Fixtures staging | 10d | 2026-08-06 | 2026-08-15 | SDR-2-PRO-DEL-E-1030 | 13d |
| SDR-2-PRO-ST-E-1030 |  | Street Lighting Poles staging | 10d | 2026-08-07 | 2026-08-16 | SDR-2-PRO-DEL-E-1020 | 12d |
| SDR-2-PRO-ST-E-1150 |  | CCTV Poles including all hardwares staging | 10d | 2026-08-21 | 2026-08-30 | SDR-2-PRO-DEL-E-1110 | 40d |
| SDR-2-PRO-ST-E-1180 |  | Racks and Patch panels staging | 10d | 2026-08-24 | 2026-09-02 | SDR-2-PRO-DEL-E-1140 | 61d |
| SDR-2-PRO-ST-E-1160 |  | CCTV Cables "Power" staging | 10d | 2026-08-27 | 2026-09-05 | SDR-2-PRO-DEL-E-1120 | 34d |
| SDR-2-PRO-ST-E-1190 |  | CCTV System,Servers & WorkStations staging | 10d | 2026-09-07 | 2026-09-16 | SDR-2-PRO-DEL-E-1150 | 23d |
| SDR-2-PRO-ST-E-1200 |  | Professional 55" Video wall at control room staging | 10d | 2026-09-21 | 2026-10-01 | SDR-2-PRO-DEL-E-1160 | 55d |
| SDR-2-PRO-ST-E-1210 |  | CCTV Switches staging | 10d | 2026-10-06 | 2026-10-15 | SDR-2-PRO-DEL-E-1170 | 19d |
| SDR-2-PRO-ST-E-1230 |  | CCTV UPS staging | 10d | 2026-10-14 | 2026-10-23 | SDR-2-PRO-DEL-E-1190 | 11d |
| SDR-2-PRO-ST-E-1220 |  | CCTV Wireless P2P bridges staging | 10d | 2026-10-15 | 2026-10-24 | SDR-2-PRO-DEL-E-1180 | 10d |
| SDR-2-PRO-ST-E-1240 |  | CCTV Solar System staging | 10d | 2026-11-12 | 2026-11-21 | SDR-2-PRO-DEL-E-1200 | 21d |
|  | CON | **Construction** |  | 2026-02-07 | 2027-07-05 |  |  |
|  | RO | **ROAD WORKS** |  | 2026-02-07 | 2027-04-17 |  |  |
|  | ZA | **ZONE A** |  | 2026-02-07 | 2027-04-17 |  |  |
|  | 14 | **GENERAL WORKS** |  | 2026-02-07 | 2026-03-29 |  |  |

| ID | WBS | Task | Duration | Start | Finish | Predecessors | Total float |
| --- | --- | --- | --- | --- | --- | --- | --- |
|  | 10 | **Cleaning and removal of organic materials in Zone A** |  | 2026-02-07 | 2026-02-24 |  |  |
| SDR-2-CON-RW-ZA-1000 |  | Cleaning and removal of organic materials in Zone A | 16d | 2026-02-07 | 2026-02-24 | SDR-2-MOBL-1060 | 9d |
|  | 12 | **Surveying works Zone A** |  | 2026-03-07 | 2026-03-29 |  |  |
| SDR-2-CON-RW-ZA-1010 |  | Surveying works Zone A | 16d | 2026-03-07 | 2026-03-29 | SDR-2-CON-RW-ZA-1000, SDR-2-PRO-MAL-E-1150, SDR-2-PRO-MAL-E-1140, SDR-2-PRO-MAL-E-1130, SDR-2-PRO-MAL-E-1120, SDR-2-PRO-MAL-E-1110, SDR-2-PRO-MAL-E-1000, SDR-2-PRO-MAL-E-1010, SDR-2-PRO-MAL-E-1020, SDR-2-PRO-MAL-E-1030, SDR-2-PRO-MAL-E-1040, SDR-2-PRO-MAL-E-1050, SDR-2-PRO-MAL-E-1180, SDR-2-PRO-MAL-E-1060, SDR-2-PRO-MAL-E-1070, SDR-2-PRO-MAL-E-1080, SDR-2-PRO-MAL-E-1090, SDR-2-PRO-MAL-E-1100, SDR-2-PRO-MAL-E-1190, SDR-2-PRO-MAL-M-1000, SDR-2-PRO-MAL-M-1010, SDR-2-PRO-MAL-M-1020, SDR-2-PRO-MAL-M-1030, SDR-2-PRO-MAL-M-1040, SDR-2-PRO-MAL-M-1050, SDR-2-PRO-MAL-M-1060, SDR-2-PRO-MAL-M-1070, SDR-2-PRO-MAS-E-1000, SDR-2-PRO-MAS-E-1010, SDR-2-PRO-MAS-E-1020, SDR-2-PRO-MAS-E-1030, SDR-2-PRO-MAS-C-1000, SDR-2-PRO-MAS-C-1010, SDR-2-PRO-MAS-C-1040, SDR-2-PRO-MAS-C-1020, SDR-2-PRO-MAS-C-1030, SDR-2-PRO-MAS-C-1050, SDR-2-PRO-MAS-C-1060, SDR-2-PRO-MAS-C-1070, SDR-2-PRO-MAS-C-1090, SDR-2-PRO-MAS-C-1100, SDR-2-PRO-MAS-C-1080, SDR-2-ENG-APP-M-1010 SS, SDR-2-PREL-1100 | 1d |
|  | 1 | **ROAD WORKS IN ( PH2-COL-MC10 )** |  | 2026-04-12 | 2027-03-27 |  |  |
|  | 1 | **Earth Works Road** |  | 2026-04-12 | 2026-05-04 |  |  |
| SDR-2-CON-RW-ZA-1020 |  | Roadway Excavation and cuttings | 20d | 2026-04-12 | 2026-05-04 | SDR-2-CON-RW-ZA-1010 FS+11d, SDR-2-PRO-ST-C-1000 FF | 1d |
|  | 10 | **Backfilling Works** |  | 2026-05-11 | 2026-08-20 |  |  |
| SDR-2-CON-RW-ZA-2860 |  | Embankments to the Road 1 Layer | 21d | 2026-05-11 | 2026-06-08 | SDR-2-CON-RW-ZA-1020 FS+5d | 11d |
| SDR-2-CON-RW-ZA-2870 |  | Embankments to the Road 2 Layer | 21d | 2026-06-09 | 2026-07-02 | SDR-2-CON-RW-ZA-2860 | 11d |
| SDR-2-CON-RW-ZA-2880 |  | Embankments to the Road 3 Layer | 21d | 2026-07-04 | 2026-07-27 | SDR-2-PRO-DES-E-1010, SDR-2-PRO-DES-E-1010 FF, SDR-2-CON-RW-ZA-2870 | 11d |
| SDR-2-CON-RW-ZA-1030 |  | Embankments to the Road 4 Layer | 21d | 2026-07-28 | 2026-08-20 | SDR-2-CON-RW-ZA-2880 | 11d |
|  | 9 | **Earth Works Plot** |  | 2026-09-15 | 2026-12-22 |  |  |
| SDR-2-CON-RW-ZA-1040 |  | Plot Excavation for cuttings (all types of soil) | 21d | 2026-09-15 | 2026-10-10 | SDR-2-CON-RW-ZA-1060, SDR-2-PRO-DES-C-1070, SDR-2-PRO-DES-C-1000 | 27d |
| SDR-2-CON-RW-ZA-2890 |  | Embankments to the Plot Layer 1 | 21d | 2026-10-11 | 2026-11-03 | SDR-2-CON-RW-ZA-1040 | 43d |
| SDR-2-CON-RW-ZA-2900 |  | Embankments to the Plot Layer 2 | 21d | 2026-11-04 | 2026-11-28 | SDR-2-CON-RW-ZA-2890 | 43d |
| SDR-2-CON-RW-ZA-1050 |  | Embankments to the Plot Layer 3 | 21d | 2026-11-29 | 2026-12-22 | SDR-2-CON-RW-ZA-2900 | 43d |
|  | 11 | **Subgrade** |  | 2026-08-22 | 2026-09-14 |  |  |
| SDR-2-CON-RW-ZA-1060 |  | Subgrade layer works | 21d | 2026-08-22 | 2026-09-14 | SDR-2-CON-RW-ZA-1030 | 11d |
|  | 2 | **Base Course** |  | 2026-09-15 | 2026-10-10 |  |  |
| SDR-2-CON-RW-ZA-1070 |  | Aggregate base course layer | 21d | 2026-09-15 | 2026-10-10 | SDR-2-CON-RW-ZA-1060, SDR-2-PRO-ST-C-1070 | 11d |
|  | 8 | **Demolition Work** |  | 2026-10-11 | 2026-10-24 |  |  |
| SDR-2-CON-RW-ZA-1080 |  | Milling of wearing course | 12d | 2026-10-11 | 2026-10-24 | SDR-2-CON-RW-ZA-1070 | 11d |
|  | 3 | **Asphalt Works** |  | 2026-10-25 | 2026-12-06 |  |  |
| SDR-2-CON-RW-ZA-1090 |  | Asphalt works 2st Layer with RC-01 | 16d | 2026-10-25 | 2026-11-11 | SDR-2-PRO-MAS-C-1020, SDR-2-CON-RW-ZA-1070, SDR-2-CON-RW-ZA-1080, SDR-2-PRO-DES-C-1020 FF, SDR-2-PRO-DES-C-1010 | 11d |
| SDR-2-CON-RW-ZA-1100 |  | Asphalt works 3nd layer with RC-02 | 21d | 2026-11-12 | 2026-12-06 | SDR-2-CON-RW-ZA-1090, SDR-2-PRO-DES-C-1020 | 11d |
|  | 4 | **Kerbstone Installation** |  | 2026-09-15 | 2026-12-30 |  |  |
| SDR-2-CON-RW-ZA-3400 |  | Kerbstone Installation "all Types" Part1 | 18d | 2026-09-15 | 2026-10-06 | SDR-2-CON-RW-ZA-1060, SDR-2-PRO-ST-C-1030 | 30d |
| SDR-2-CON-RW-ZA-1110 |  | Kerbstone Installation "all Types" Part2 | 21d | 2026-12-07 | 2026-12-30 | SDR-2-CON-CC-ZG-1610, SDR-2-CON-RW-ZA-1100, SDR-2-PRO-ST-C-1010, SDR-2-PRO-MAS-C-1010, SDR-2-PRO-MAS-C-1040 | 11d |
|  | 5 | **Interlock Installation** |  | 2026-12-31 | 2027-01-24 |  |  |
| SDR-2-CON-RW-ZA-1120 |  | Interlock Installation | 21d | 2026-12-31 | 2027-01-24 | SDR-2-CON-RW-ZA-1110, SDR-2-PRO-ST-C-1050, SDR-2-PRO-MAS-C-1050, SDR-2-PRO-DES-C-1040 | 11d |
|  | 6 | **Road Marking** |  | 2027-01-25 | 2027-02-27 |  |  |
| SDR-2-CON-RW-ZA-1130 |  | Retroreflective Thermoplastic White Traffic lines | 14d | 2027-01-25 | 2027-02-09 | SDR-2-CON-RW-ZA-1120, SDR-2-PRO-ST-C-1040, SDR-2-PRO-MAS-C-1030, SDR-2-CON-RW-ZA-1050 SS | 11d |
| SDR-2-CON-RW-ZA-1140 |  | Retroreflective Thermoplastic Yellow, Traffic lines | 14d | 2027-02-10 | 2027-02-27 | SDR-2-CON-RW-ZA-1130 | 11d |
|  | 7 | **Traffic Signage** |  | 2027-02-28 | 2027-03-27 |  |  |
| SDR-2-CON-RW-ZA-1150 |  | Single post-Traffic signs Installation | 20d | 2027-02-28 | 2027-03-27 | SDR-2-CON-RW-ZA-1140, SDR-2-PRO-ST-C-1060, SDR-2-PRO-MAS-C-1060, SDR-2-CON-RW-ZA-1050 | 11d |
|  | 8 | **ROAD WORKS IN ( PH2-COL-MC20 )** |  | 2026-04-16 | 2027-03-29 |  |  |
|  | 1 | **Earth Works Road** |  | 2026-04-16 | 2026-05-09 |  |  |
| SDR-2-CON-RW-ZA-1160 |  | Roadway Excavation and cuttings | 20d | 2026-04-16 | 2026-05-09 | SDR-2-CON-RW-ZA-1020 SS+4d | 1d |
|  | 10 | **Backfilling Works** |  | 2026-05-25 | 2026-09-05 |  |  |
| SDR-2-CON-RW-ZA-2910 |  | Embankments to the Road Layer 1 | 21d | 2026-05-25 | 2026-06-22 | SDR-2-PRO-DES-E-1000, SDR-2-CON-RW-ZA-1160 | 9d |
| SDR-2-CON-RW-ZA-2920 |  | Embankments to the Road Layer 2 | 21d | 2026-06-23 | 2026-07-16 | SDR-2-CON-RW-ZA-2910 | 9d |
| SDR-2-CON-RW-ZA-2930 |  | Embankments to the Road Layer 3 | 21d | 2026-07-18 | 2026-08-10 | SDR-2-CON-RW-ZA-2920 | 9d |
| SDR-2-CON-RW-ZA-1170 |  | Embankments to the Road Layer 4 | 21d | 2026-08-12 | 2026-09-05 | SDR-2-CON-RW-ZA-2930 FS+1d | 9d |
|  | 11 | **Subgrade** |  | 2026-09-06 | 2026-09-30 |  |  |
| SDR-2-CON-RW-ZA-1180 |  | Subgrade layer works | 21d | 2026-09-06 | 2026-09-30 | SDR-2-CON-RW-ZA-1170 | 9d |
|  | 9 | **Earth Works Plot** |  | 2026-10-01 | 2027-01-06 |  |  |
| SDR-2-CON-RW-ZA-1190 |  | Plot Excavation for cuttings (all types of soil) | 21d | 2026-10-01 | 2026-10-25 | SDR-2-CON-RW-ZA-1160, SDR-2-CON-RW-ZA-1180 | 15d |
| SDR-2-CON-RW-ZA-2940 |  | Embankments to the Plot 1 Layer | 21d | 2026-10-26 | 2026-11-18 | SDR-2-CON-RW-ZA-1170, SDR-2-CON-RW-ZA-1190 | 15d |
| SDR-2-CON-RW-ZA-2950 |  | Embankments to the Plot 2 Layer | 21d | 2026-11-19 | 2026-12-13 | SDR-2-CON-RW-ZA-2940 | 15d |
| SDR-2-CON-RW-ZA-1200 |  | Embankments to the Plot 3 Layer | 21d | 2026-12-14 | 2027-01-06 | SDR-2-CON-RW-ZA-2950 | 15d |
|  | 2 | **Base Course** |  | 2026-10-01 | 2026-10-22 |  |  |
| SDR-2-CON-RW-ZA-1210 |  | Aggregate base course layer | 19d | 2026-10-01 | 2026-10-22 | SDR-2-CON-RW-ZA-1180 | 9d |
|  | 8 | **Demolition Work** |  | 2026-10-24 | 2026-10-29 |  |  |
| SDR-2-CON-RW-ZA-1220 |  | Milling of wearing course | 6d | 2026-10-24 | 2026-10-29 | SDR-2-CON-RW-ZA-1210 | 9d |
|  | 3 | **Asphalt Works** |  | 2026-10-31 | 2026-12-22 |  |  |
| SDR-2-CON-RW-ZA-1230 |  | Asphalt works 1st Layer with MC-01 | 9d | 2026-10-31 | 2026-11-09 | SDR-2-CON-RW-ZA-1210, SDR-2-CON-RW-ZA-1220 | 9d |
| SDR-2-CON-RW-ZA-1240 |  | Asphalt works 2nd layer with RC-01 | 18d | 2026-11-10 | 2026-11-30 | SDR-2-CON-RW-ZA-1230 | 9d |
| SDR-2-CON-RW-ZA-2840 |  | Asphalt Works 3 rd Layer with RC-02 | 19d | 2026-12-01 | 2026-12-22 | SDR-2-CON-RW-ZA-1240 | 9d |
|  | 4 | **Kerbstone Installation** |  | 2026-10-01 | 2027-01-16 |  |  |
| SDR-2-CON-RW-ZA-3410 |  | Kerbstone Installation "all Types" Part 1 | 18d | 2026-10-01 | 2026-10-21 | SDR-2-CON-RW-ZA-1180, SDR-2-PRO-ST-C-1100 | 18d |
| SDR-2-CON-RW-ZA-1250 |  | Kerbstone Installation "all Types" Part 2 | 21d | 2026-12-23 | 2027-01-16 | SDR-2-CON-RW-ZA-2840 | 9d |
|  | 5 | **Interlock Installation** |  | 2027-01-17 | 2027-02-09 |  |  |
| SDR-2-CON-RW-ZA-1260 |  | Interlock Installation | 21d | 2027-01-17 | 2027-02-09 | SDR-2-CON-RW-ZA-1250 | 9d |
|  | 6 | **Road Marking** |  | 2027-02-10 | 2027-03-03 |  |  |
| SDR-2-CON-RW-ZA-1270 |  | Retroreflective Thermoplastic White Traffic lines | 11d | 2027-02-10 | 2027-02-23 | SDR-2-CON-RW-ZA-1260 | 9d |
| SDR-2-CON-RW-ZA-1280 |  | Retroreflective Thermoplastic Yellow, Traffic lines | 7d | 2027-02-24 | 2027-03-03 | SDR-2-CON-RW-ZA-1270 | 9d |
|  | 7 | **Traffic Signage** |  | 2027-03-04 | 2027-03-29 |  |  |
| SDR-2-CON-RW-ZA-1290 |  | Single post-Traffic signs Installation | 18d | 2027-03-04 | 2027-03-29 | SDR-2-CON-RW-ZA-1280 | 9d |
|  | 13 | **ROAD WORKS IN ( PH2-A-MCI0 )** |  | 2026-04-21 | 2027-03-28 |  |  |

| ID | WBS | Task | Duration | Start | Finish | Predecessors | Total float |
| --- | --- | --- | --- | --- | --- | --- | --- |
|  | 1 | **Earth Works Road** |  | 2026-04-21 | 2026-05-13 |  |  |
| SDR-2-CON-RW-ZA-1300 |  | Roadway Excavation and cuttings | 20d | 2026-04-21 | 2026-05-13 | SDR-2-CON-RW-ZA-1160 SS+4d | 1d |
|  | 10 | **Backfilling Works** |  | 2026-05-14 | 2026-08-25 |  |  |
| SDR-2-CON-RW-ZA-2960 |  | Embankments to the Road 1 Layer | 21d | 2026-05-14 | 2026-06-11 | SDR-2-CON-RW-ZA-1300 | 17d |
| SDR-2-CON-RW-ZA-2970 |  | Embankments to the Road 2 Layer | 21d | 2026-06-13 | 2026-07-06 | SDR-2-CON-RW-ZA-2960 | 17d |
| SDR-2-CON-RW-ZA-2980 |  | Embankments to the Road 3 Layer | 21d | 2026-07-08 | 2026-08-01 | SDR-2-CON-RW-ZA-2970 FS+1d | 17d |
| SDR-2-CON-RW-ZA-1310 |  | Embankments to the Road 4 Layer | 21d | 2026-08-02 | 2026-08-25 | SDR-2-CON-RW-ZA-2980 | 17d |
|  | 11 | **Subgrade** |  | 2026-08-26 | 2026-09-17 |  |  |
| SDR-2-CON-RW-ZA-1320 |  | Subgrade layer works | 20d | 2026-08-26 | 2026-09-17 | SDR-2-CON-RW-ZA-1310 | 17d |
|  | 9 | **Earth Works Plot** |  | 2026-09-19 | 2026-12-06 |  |  |
| SDR-2-CON-RW-ZA-1330 |  | Plot Excavation for cuttings (all types of soil) | 21d | 2026-09-19 | 2026-10-13 | SDR-2-CON-RW-ZA-1300, SDR-2-CON-RW-ZA-1320 | 25d |
| SDR-2-CON-RW-ZA-2990 |  | Embankments to the Plot 1 Layer | 21d | 2026-10-14 | 2026-11-07 | SDR-2-CON-RW-ZA-3420, SDR-2-CON-RW-ZA-1310, SDR-2-CON-RW-ZA-1330 | 25d |
| SDR-2-CON-RW-ZA-1340 |  | Embankments to the Plot 2 Layer | 21d | 2026-11-12 | 2026-12-06 | SDR-2-CON-RW-ZA-2990 FS+4d | 35d |
|  | 2 | **Base Course** |  | 2026-09-19 | 2026-10-12 |  |  |
| SDR-2-CON-RW-ZA-1350 |  | Aggregate base course layer | 20d | 2026-09-19 | 2026-10-12 | SDR-2-CON-RW-ZA-1320 | 27d |
|  | 8 | **Demolition Work** |  | 2026-10-26 | 2026-10-31 |  |  |
| SDR-2-CON-RW-ZA-1360 |  | Milling of wearing course | 5d | 2026-10-26 | 2026-10-31 | SDR-2-CON-RW-ZA-1350, SDR-2-CON-RW-ZA-1190 | 16d |
|  | 3 | **Asphalt Works** |  | 2026-11-01 | 2026-11-30 |  |  |
| SDR-2-CON-RW-ZA-1370 |  | Asphalt works 1st Layer with MC-01 | 5d | 2026-11-01 | 2026-11-05 | SDR-2-PRO-ST-C-1020, SDR-2-CON-RW-ZA-1350, SDR-2-CON-RW-ZA-1360 | 16d |
| SDR-2-CON-RW-ZA-1380 |  | Asphalt works 2nd layer with RC-02 | 21d | 2026-11-07 | 2026-11-30 | SDR-2-CON-RW-ZA-1370 | 16d |
|  | 4 | **Kerbstone Installation** |  | 2026-09-19 | 2026-12-24 |  |  |
| SDR-2-CON-RW-ZA-3420 |  | Kerbstone Installation "all Types" Part 1 | 18d | 2026-09-19 | 2026-10-10 | SDR-2-CON-RW-ZA-1320 | 17d |
| SDR-2-CON-RW-ZA-1390 |  | Kerbstone Installation "all Types" Part 2 | 21d | 2026-12-01 | 2026-12-24 | SDR-2-CON-RW-ZA-1380 | 16d |
|  | 5 | **Interlock Installation** |  | 2026-12-26 | 2027-01-18 |  |  |
| SDR-2-CON-RW-ZA-1400 |  | Interlock Installation | 21d | 2026-12-26 | 2027-01-18 | SDR-2-CON-RW-ZA-1390 | 16d |
|  | 6 | **Road Marking** |  | 2027-01-26 | 2027-02-28 |  |  |
| SDR-2-CON-RW-ZA-1410 |  | Retroreflective Thermoplastic White Traffic lines | 14d | 2027-01-26 | 2027-02-10 | SDR-2-CON-CC-ZG-1660, SDR-2-CON-RW-ZA-1400 | 10d |
| SDR-2-CON-RW-ZA-1420 |  | Retroreflective Thermoplastic Yellow, Traffic lines | 14d | 2027-02-11 | 2027-02-28 | SDR-2-CON-RW-ZA-1410 | 10d |
|  | 7 | **Traffic Signage** |  | 2027-03-01 | 2027-03-28 |  |  |
| SDR-2-CON-RW-ZA-1430 |  | Single post-Traffic signs Installation | 20d | 2027-03-01 | 2027-03-28 | SDR-2-CON-RW-ZA-1420, SDR-2-CON-RW-ZA-1340, SDR-2-CON-RW-ZA-1200 | 10d |
|  | 2 | **ROAD WORKS IN ( PH2-A-MCA0 )** |  | 2026-04-26 | 2027-03-22 |  |  |
|  | 1 | **Earth Works Road** |  | 2026-04-26 | 2026-05-18 |  |  |
| SDR-2-CON-RW-ZA-1440 |  | Roadway Excavation and cuttings | 20d | 2026-04-26 | 2026-05-18 | SDR-2-CON-RW-ZA-1300 SS+4d | 1d |
|  | 10 | **Backfilling Works** |  | 2026-05-19 | 2026-08-30 |  |  |
| SDR-2-CON-RW-ZA-3000 |  | Embankments to the Road 1 Layer | 21d | 2026-05-19 | 2026-06-16 | SDR-2-CON-RW-ZA-1440 | 15d |
| SDR-2-CON-RW-ZA-3010 |  | Embankments to the Road 2 Layer | 21d | 2026-06-17 | 2026-07-11 | SDR-2-PRO-DES-E-1010, SDR-2-CON-RW-ZA-3000 | 15d |
| SDR-2-CON-RW-ZA-3020 |  | Embankments to the Road 3 Layer | 21d | 2026-07-12 | 2026-08-04 | SDR-2-CON-RW-ZA-3010 | 15d |
| SDR-2-CON-RW-ZA-1450 |  | Embankments to the Road 4 Layer | 21d | 2026-08-06 | 2026-08-30 | SDR-2-CON-RW-ZA-3000 SS, SDR-2-CON-RW-ZA-3020 FS+1d | 15d |
|  | 11 | **Subgrade** |  | 2026-08-31 | 2026-09-24 |  |  |
| SDR-2-CON-RW-ZA-1460 |  | Subgrade layer works | 21d | 2026-08-31 | 2026-09-24 | SDR-2-CON-RW-ZA-1450 | 15d |
|  | 9 | **Earth Works Plot** |  | 2026-09-26 | 2026-12-07 |  |  |
| SDR-2-CON-RW-ZA-1470 |  | Plot Excavation for cuttings (all types of soil) | 21d | 2026-09-26 | 2026-10-19 | SDR-2-CON-RW-ZA-1440, SDR-2-CON-RW-ZA-1460 | 22d |
| SDR-2-CON-RW-ZA-3030 |  | Embankments to the Plot 1 Layer | 21d | 2026-10-20 | 2026-11-12 | SDR-2-CON-RW-ZA-1330, SDR-2-CON-RW-ZA-1470 | 22d |
| SDR-2-CON-RW-ZA-1480 |  | Embankments to the Plot 2 Layer | 21d | 2026-11-14 | 2026-12-07 | SDR-2-CON-RW-ZA-3030 | 22d |
|  | 2 | **Base Course** |  | 2026-09-26 | 2026-10-12 |  |  |
| SDR-2-CON-RW-ZA-1490 |  | Aggregate base course layer | 15d | 2026-09-26 | 2026-10-12 | SDR-2-CON-RW-ZA-1460 | 15d |
|  | 8 | **Demolition Work** |  | 2026-10-13 | 2026-10-17 |  |  |
| SDR-2-CON-RW-ZA-1500 |  | Milling of wearing course | 4d | 2026-10-13 | 2026-10-17 | SDR-2-CON-RW-ZA-3420, SDR-2-CON-RW-ZA-1490 | 15d |
|  | 3 | **Asphalt Works** |  | 2026-10-18 | 2026-11-30 |  |  |
| SDR-2-CON-RW-ZA-1510 |  | Asphalt works 1st Layer with MC-01 | 18d | 2026-10-18 | 2026-11-07 | SDR-2-CON-RW-ZA-1490, SDR-2-CON-RW-ZA-1500 | 15d |
| SDR-2-CON-RW-ZA-1520 |  | Asphalt works 2nd layer with RC-02 | 20d | 2026-11-08 | 2026-11-30 | SDR-2-CON-RW-ZA-1510 | 15d |
|  | 4 | **Kerbstone Installation** |  | 2026-09-26 | 2026-12-24 |  |  |
| SDR-2-CON-RW-ZA-3440 |  | Kerbstone Installation "all Types" Part 1 | 21d | 2026-09-26 | 2026-10-19 | SDR-2-CON-RW-ZA-1460 | 39d |
| SDR-2-CON-RW-ZA-1530 |  | Kerbstone Installation "all Types" Part 2 | 21d | 2026-12-01 | 2026-12-24 | SDR-2-CON-RW-ZA-1520 | 15d |
|  | 5 | **Interlock Installation** |  | 2026-12-26 | 2027-01-18 |  |  |
| SDR-2-CON-RW-ZA-1540 |  | Interlock Installation | 21d | 2026-12-26 | 2027-01-18 | SDR-2-CON-RW-ZA-1530 | 15d |
|  | 6 | **Road Marking** |  | 2027-01-19 | 2027-02-21 |  |  |
| SDR-2-CON-RW-ZA-1550 |  | Retroreflective Thermoplastic White Traffic lines | 14d | 2027-01-19 | 2027-02-03 | SDR-2-CON-SL-ZA-3490, SDR-2-CON-RW-ZA-1540 | 15d |
| SDR-2-CON-RW-ZA-1560 |  | Retroreflective Thermoplastic Yellow, Traffic lines | 15d | 2027-02-04 | 2027-02-21 | SDR-2-CON-RW-ZA-1550 | 15d |
|  | 7 | **Traffic Signage** |  | 2027-02-23 | 2027-03-22 |  |  |
| SDR-2-CON-RW-ZA-1570 |  | Single post-Traffic signs Installation | 20d | 2027-02-23 | 2027-03-22 | SDR-2-CON-RW-ZA-1560, SDR-2-CON-RW-ZA-1480 | 15d |
|  | 3 | **ROAD WORKS IN ( PH2-A-MCB0 )** |  | 2026-04-30 | 2027-03-28 |  |  |
|  | 1 | **Earth Works Road** |  | 2026-04-30 | 2026-05-23 |  |  |
| SDR-2-CON-RW-ZA-1580 |  | Roadway Excavation and cuttings | 20d | 2026-04-30 | 2026-05-23 | SDR-2-CON-RW-ZA-1440 SS+4d | 1d |
|  | 10 | **Backfilling Works** |  | 2026-05-26 | 2026-09-06 |  |  |
| SDR-2-CON-RW-ZA-3040 |  | Embankments to the Road 1 Layer | 21d | 2026-05-26 | 2026-06-23 | SDR-2-CON-RW-ZA-1580 FS+2d | 28d |
| SDR-2-CON-RW-ZA-3050 |  | Embankments to the Road 2 Layer | 21d | 2026-06-24 | 2026-07-18 | SDR-2-CON-RW-ZA-3040 | 28d |
| SDR-2-CON-RW-ZA-3060 |  | Embankments to the Road 3 Layer | 21d | 2026-07-19 | 2026-08-11 | SDR-2-CON-RW-ZA-3050 | 28d |
| SDR-2-CON-RW-ZA-1590 |  | Embankments to the Road 4 Layer | 21d | 2026-08-13 | 2026-09-06 | SDR-2-CON-RW-ZA-3060 FS+1d | 28d |
|  | 11 | **Subgrade** |  | 2026-09-07 | 2026-09-26 |  |  |

| ID | WBS | Task | Duration | Start | Finish | Predecessors | Total float |
| --- | --- | --- | --- | --- | --- | --- | --- |
| SDR-2-CON-RW-ZA-1600 |  | Subgrade layer works | 16d | 2026-09-07 | 2026-09-26 | SDR-2-CON-RW-ZA-1590 | 28d |
|  | 9 | **Earth Works Plot** |  | 2026-09-27 | 2026-12-10 |  |  |
| SDR-2-CON-RW-ZA-1610 |  | Plot Excavation for cuttings (all types of soil) | 21d | 2026-09-27 | 2026-10-20 | SDR-2-CON-RW-ZA-1580, SDR-2-CON-RW-ZA-1600 | 30d |
| SDR-2-CON-RW-ZA-3070 |  | Embankments to the Plot 1 Layer | 21d | 2026-10-22 | 2026-11-15 | SDR-2-CON-RW-ZA-3440 FS+2d, SDR-2-CON-RW-ZA-3420, SDR-2-CON-RW-ZA-1610 | 39d |
| SDR-2-CON-RW-ZA-1620 |  | Embankments to the Plot 2 Layer | 21d | 2026-11-17 | 2026-12-10 | SDR-2-CON-RW-ZA-3070 FS+1d | 39d |
|  | 2 | **Base Course** |  | 2026-09-27 | 2026-10-19 |  |  |
| SDR-2-CON-RW-ZA-1630 |  | Aggregate base course layer | 20d | 2026-09-27 | 2026-10-19 | SDR-2-CON-RW-ZA-1600 | 28d |
|  | 8 | **Demolition Work** |  | 2026-10-20 | 2026-10-22 |  |  |
| SDR-2-CON-RW-ZA-1640 |  | Milling of wearing course | 3d | 2026-10-20 | 2026-10-22 | SDR-2-CON-RW-ZA-1470 SS, SDR-2-CON-RW-ZA-1630 | 28d |
|  | 3 | **Asphalt Works** |  | 2026-10-24 | 2026-11-30 |  |  |
| SDR-2-CON-RW-ZA-1650 |  | Asphalt works 1st Layer with MC-01 | 21d | 2026-10-24 | 2026-11-16 | SDR-2-CON-RW-ZA-1630, SDR-2-CON-RW-ZA-1640, SDR-2-CON-RW-ZA-1610 | 28d |
| SDR-2-CON-RW-ZA-1660 |  | Asphalt works 2nd layer with RC-02 | 12d | 2026-11-17 | 2026-11-30 | SDR-2-CON-RW-ZA-3030, SDR-2-CON-RW-ZA-1650 | 28d |
|  | 4 | **Kerbstone Installation** |  | 2026-09-27 | 2026-12-30 |  |  |
| SDR-2-CON-RW-ZA-3430 |  | Kerbstone Installation "all Types" Part 1 | 20d | 2026-09-27 | 2026-10-19 | SDR-2-CON-RW-ZA-1600 | 43d |
| SDR-2-CON-RW-ZA-1670 |  | Kerbstone Installation "all Types" Part 2 | 20d | 2026-12-08 | 2026-12-30 | SDR-2-CON-RW-ZA-1480, SDR-2-CON-RW-ZA-3430, SDR-2-CON-RW-ZA-1660 | 22d |
|  | 5 | **Interlock Installation** |  | 2026-12-31 | 2027-01-24 |  |  |
| SDR-2-CON-RW-ZA-1680 |  | Interlock Installation | 21d | 2026-12-31 | 2027-01-24 | SDR-2-CON-RW-ZA-1670 | 22d |
|  | 6 | **Road Marking** |  | 2027-01-25 | 2027-02-28 |  |  |
| SDR-2-CON-RW-ZA-1690 |  | Retroreflective Thermoplastic White Traffic lines | 15d | 2027-01-25 | 2027-02-10 | SDR-2-CON-RW-ZA-1680 | 22d |
| SDR-2-CON-RW-ZA-1700 |  | Retroreflective Thermoplastic Yellow, Traffic lines | 14d | 2027-02-11 | 2027-02-28 | SDR-2-CON-RW-ZA-1690 | 22d |
|  | 7 | **Traffic Signage** |  | 2027-03-01 | 2027-03-28 |  |  |
| SDR-2-CON-RW-ZA-1710 |  | Single post-Traffic signs Installation | 20d | 2027-03-01 | 2027-03-28 | SDR-2-CON-RW-ZA-1700, SDR-2-CON-RW-ZA-1620 | 22d |
|  | 7 | **ROAD WORKS IN ( PH2-A-MCC0 )** |  | 2026-05-05 | 2027-03-20 |  |  |
|  | 1 | **Earth Works Road** |  | 2026-05-05 | 2026-06-01 |  |  |
| SDR-2-CON-RW-ZA-1720 |  | Roadway Excavation and cuttings | 20d | 2026-05-05 | 2026-06-01 | SDR-2-CON-RW-ZA-1580 SS+4d | 1d |
|  | 10 | **Backfilling Works** |  | 2026-06-02 | 2026-09-12 |  |  |
| SDR-2-CON-RW-ZA-3080 |  | Embankments to the Road 1 Layer | 21d | 2026-06-02 | 2026-06-25 | SDR-2-CON-RW-ZA-1720 | 17d |
| SDR-2-CON-RW-ZA-3090 |  | Embankments to the Road 2 Layer | 21d | 2026-06-27 | 2026-07-20 | SDR-2-CON-RW-ZA-3080 | 17d |
| SDR-2-CON-RW-ZA-3100 |  | Embankments to the Road 3 Layer | 21d | 2026-07-21 | 2026-08-13 | SDR-2-PRO-DEL-M-1050, SDR-2-PRO-DEL-M-1030 FS+3d, SDR-2-CON-RW-ZA-3090 | 17d |
| SDR-2-CON-RW-ZA-1730 |  | Embankments to the Road 4 Layer | 21d | 2026-08-19 | 2026-09-12 | SDR-2-CON-RW-ZA-3100 FS+4d | 17d |
|  | 11 | **Subgrade** |  | 2026-09-13 | 2026-10-01 |  |  |
| SDR-2-CON-RW-ZA-1740 |  | Subgrade layer works | 16d | 2026-09-13 | 2026-10-01 | SDR-2-CON-RW-ZA-1730 | 17d |
|  | 9 | **Earth Works Plot** |  | 2026-10-03 | 2026-12-14 |  |  |
| SDR-2-CON-RW-ZA-1750 |  | Plot Excavation for cuttings (all types of soil) | 20d | 2026-10-03 | 2026-10-25 | SDR-2-PRO-DEL-E-1160, SDR-2-CON-RW-ZA-1720, SDR-2-CON-RW-ZA-1740 | 35d |
| SDR-2-CON-RW-ZA-3110 |  | Embankments to the Plot 1 Layer | 21d | 2026-10-26 | 2026-11-18 | SDR-2-CON-RW-ZA-3450, SDR-2-CON-RW-ZA-1470 FF+3d, SDR-2-CON-RW-ZA-1750 | 35d |
| SDR-2-CON-RW-ZA-1760 |  | Embankments to the Plot 2 Layer | 21d | 2026-11-21 | 2026-12-14 | SDR-2-CON-RW-ZA-3070 FS+4d, SDR-2-CON-RW-ZA-3110 | 39d |
|  | 2 | **Base Course** |  | 2026-10-03 | 2026-10-26 |  |  |
| SDR-2-CON-RW-ZA-1770 |  | Aggregate base course layer | 21d | 2026-10-03 | 2026-10-26 | SDR-2-CON-RW-ZA-1740 | 17d |
|  | 8 | **Demolition Work** |  | 2026-10-27 | 2026-10-29 |  |  |
| SDR-2-CON-RW-ZA-1780 |  | Milling of wearing course | 3d | 2026-10-27 | 2026-10-29 | SDR-2-CON-RW-ZA-3430 SS, SDR-2-CON-RW-ZA-1770 | 17d |
|  | 3 | **Asphalt Works** |  | 2026-10-31 | 2026-11-30 |  |  |
| SDR-2-CON-RW-ZA-1790 |  | Asphalt works 1st Layer with MC-01 | 16d | 2026-10-31 | 2026-11-17 | SDR-2-CON-RW-ZA-3470, SDR-2-CON-RW-ZA-1770, SDR-2-CON-RW-ZA-1780 | 17d |
| SDR-2-CON-RW-ZA-1800 |  | Asphalt works 2nd layer with RC-02 | 11d | 2026-11-18 | 2026-11-30 | SDR-2-CON-RW-ZA-1790 | 17d |
|  | 4 | **Kerbstone Installation** |  | 2026-10-03 | 2026-12-23 |  |  |
| SDR-2-CON-RW-ZA-3450 |  | Kerbstone Installation "all Types" Part 1 | 18d | 2026-10-03 | 2026-10-22 | SDR-2-CON-RW-ZA-1740 | 37d |
| SDR-2-CON-RW-ZA-1810 |  | Kerbstone Installation "all Types" Part 2 | 20d | 2026-12-01 | 2026-12-23 | SDR-2-CON-RW-ZA-1800 | 17d |
|  | 5 | **Interlock Installation** |  | 2026-12-24 | 2027-01-17 |  |  |
| SDR-2-CON-RW-ZA-1820 |  | Interlock Installation | 21d | 2026-12-24 | 2027-01-17 | SDR-2-CON-RW-ZA-1810 | 17d |
|  | 6 | **Road Marking** |  | 2027-01-18 | 2027-02-18 |  |  |
| SDR-2-CON-RW-ZA-1830 |  | Retroreflective Thermoplastic White Traffic lines | 14d | 2027-01-18 | 2027-02-02 | SDR-2-CON-RW-ZA-1820, SDR-2-CON-RW-ZA-1760 SS | 17d |
| SDR-2-CON-RW-ZA-1840 |  | Retroreflective Thermoplastic Yellow, Traffic lines | 14d | 2027-02-03 | 2027-02-18 | SDR-2-CON-RW-ZA-1830 | 17d |
|  | 7 | **Traffic Signage** |  | 2027-02-20 | 2027-03-20 |  |  |
| SDR-2-CON-RW-ZA-1850 |  | Single post-Traffic signs Installation | 20d | 2027-02-20 | 2027-03-20 | SDR-2-CON-RW-ZA-1840, SDR-2-CON-RW-ZA-1760 | 17d |
|  | 4 | **ROAD WORKS IN ( PH2-A-MCD0 )** |  | 2026-05-09 | 2027-04-03 |  |  |
|  | 1 | **Earth Works Road** |  | 2026-05-09 | 2026-06-04 |  |  |
| SDR-2-CON-RW-ZA-1860 |  | Roadway Excavation and cuttings | 20d | 2026-05-09 | 2026-06-04 | SDR-2-CON-RW-ZA-1720 SS+3d | 1d |
|  | 10 | **Backfilling Works** |  | 2026-06-06 | 2026-09-12 |  |  |
| SDR-2-CON-RW-ZA-3120 |  | Embankments to the Road 1 Layer | 21d | 2026-06-06 | 2026-06-29 | SDR-2-CON-RW-ZA-1860 | 16d |
| SDR-2-CON-RW-ZA-3130 |  | Embankments to the Road 2 Layer | 21d | 2026-06-30 | 2026-07-23 | SDR-2-PRO-DES-E-1000, SDR-2-PRO-DES-C-1000, SDR-2-CON-RW-ZA-3120 | 16d |
| SDR-2-CON-RW-ZA-3140 |  | Embankments to the Road 3 Layer | 21d | 2026-07-25 | 2026-08-17 | SDR-2-CON-RW-ZA-3130 | 16d |
| SDR-2-CON-RW-ZA-1870 |  | Embankments to the Road 4 Layer | 21d | 2026-08-19 | 2026-09-12 | SDR-2-PRO-DEL-E-1040, SDR-2-CON-RW-ZA-3140 FS+1d | 16d |
|  | 11 | **Subgrade** |  | 2026-09-13 | 2026-10-06 |  |  |
| SDR-2-CON-RW-ZA-1880 |  | Subgrade layer works | 20d | 2026-09-13 | 2026-10-06 | SDR-2-PRO-DEL-E-1100, SDR-2-PRO-DES-C-1070, SDR-2-CON-RW-ZA-1870 | 16d |
|  | 9 | **Earth Works Plot** |  | 2026-10-07 | 2026-12-20 |  |  |
| SDR-2-CON-RW-ZA-1890 |  | Plot Excavation for cuttings (all types of soil) | 21d | 2026-10-07 | 2026-10-31 | SDR-2-CON-RW-ZA-1860, SDR-2-CON-RW-ZA-1880 | 16d |
| SDR-2-CON-RW-ZA-3150 |  | Embankments to the Plot 1 Layer | 21d | 2026-11-01 | 2026-11-24 | SDR-2-CON-RW-ZA-1890 | 19d |
| SDR-2-CON-RW-ZA-1900 |  | Embankments to the Plot 2 Layer | 21d | 2026-11-26 | 2026-12-20 | SDR-2-CON-RW-ZA-3150 FS+1d | 19d |
|  | 2 | **Base Course** |  | 2026-10-07 | 2026-10-29 |  |  |
| SDR-2-CON-RW-ZA-1910 |  | Aggregate base course layer | 20d | 2026-10-07 | 2026-10-29 | SDR-2-CON-RW-ZA-1880 | 21d |
|  | 8 | **Demolition Work** |  | 2026-10-31 | 2026-11-05 |  |  |

| ID | WBS | Task | Duration | Start | Finish | Predecessors | Total float |
| --- | --- | --- | --- | --- | --- | --- | --- |
| SDR-2-CON-RW-ZA-1920 |  | Milling of wearing course | 6d | 2026-10-31 | 2026-11-05 | SDR-2-CON-RW-ZA-1910, SDR-2-CON-RW-ZA-1750 SS | 21d |
|  | 3 | **Asphalt Works** |  | 2026-11-25 | 2026-12-13 |  |  |
| SDR-2-CON-RW-ZA-1930 |  | Asphalt works 1st Layer with MC-01 | 9d | 2026-11-25 | 2026-12-05 | SDR-2-CON-RW-ZA-3450 SS, SDR-2-CON-RW-ZA-3480, SDR-2-CON-ST-ZA-6340, SDR-2-CON-RW-ZA-1910, SDR-2-CON-RW-ZA-1920 | 5d |
| SDR-2-CON-RW-ZA-1940 |  | Asphalt works 2nd layer with RC-02 | 7d | 2026-12-06 | 2026-12-13 | SDR-2-CON-RW-ZA-1930 | 5d |
|  | 4 | **Kerbstone Installation** |  | 2026-10-07 | 2027-01-06 |  |  |
| SDR-2-CON-RW-ZA-3460 |  | Kerbstone Installation "all Types" Part 1 | 18d | 2026-10-07 | 2026-10-27 | SDR-2-CON-RW-ZA-1880 | 17d |
| SDR-2-CON-RW-ZA-1950 |  | Kerbstone Installation "all Types" Part 2 | 21d | 2026-12-14 | 2027-01-06 | SDR-2-CON-RW-ZA-1940 | 5d |
|  | 5 | **Interlock Installation** |  | 2027-01-07 | 2027-01-31 |  |  |
| SDR-2-CON-RW-ZA-1960 |  | Interlock Installation | 21d | 2027-01-07 | 2027-01-31 | SDR-2-CON-RW-ZA-1950 | 5d |
|  | 6 | **Road Marking** |  | 2027-02-01 | 2027-03-06 |  |  |
| SDR-2-CON-RW-ZA-1970 |  | Retroreflective Thermoplastic White Traffic lines | 14d | 2027-02-01 | 2027-02-16 | SDR-2-CON-RW-ZA-1960, SDR-2-CON-RW-ZA-1900 SS+2d | 5d |
| SDR-2-CON-RW-ZA-1980 |  | Retroreflective Thermoplastic Yellow, Traffic lines | 14d | 2027-02-17 | 2027-03-06 | SDR-2-CON-RW-ZA-1970 | 5d |
|  | 7 | **Traffic Signage** |  | 2027-03-07 | 2027-04-03 |  |  |
| SDR-2-CON-RW-ZA-1990 |  | Single post-Traffic signs Installation | 20d | 2027-03-07 | 2027-04-03 | SDR-2-CON-RW-ZA-1980, SDR-2-CON-RW-ZA-1900 | 5d |
|  | 5 | **ROAD WORKS IN ( PH2-A-MCE0 )** |  | 2026-05-12 | 2027-03-21 |  |  |
|  | 1 | **Earth Works Road** |  | 2026-05-12 | 2026-06-08 |  |  |
| SDR-2-CON-RW-ZA-2000 |  | Roadway Excavation and cuttings | 20d | 2026-05-12 | 2026-06-08 | SDR-2-CON-RW-ZA-1860 SS+3d | 1d |
|  | 10 | **Backfilling Works** |  | 2026-06-09 | 2026-09-14 |  |  |
| SDR-2-CON-RW-ZA-3160 |  | Embankments to the Road 1 Layer | 21d | 2026-06-09 | 2026-07-02 | SDR-2-CON-RW-ZA-2000 | 17d |
| SDR-2-CON-RW-ZA-3170 |  | Embankments to the Road 2 Layer | 21d | 2026-07-04 | 2026-07-27 | SDR-2-CON-RW-ZA-3160 | 17d |
| SDR-2-CON-RW-ZA-3180 |  | Embankments to the Road 3 Layer | 21d | 2026-07-28 | 2026-08-20 | SDR-2-CON-RW-ZA-3170 | 17d |
| SDR-2-CON-RW-ZA-2010 |  | Embankments to the Road 4 Layer | 21d | 2026-08-22 | 2026-09-14 | SDR-2-PRO-DEL-E-1100, SDR-2-CON-RW-ZA-3180, SDR-2-CON-RW-ZA-3180 FF | 17d |
|  | 11 | **Subgrade** |  | 2026-09-15 | 2026-10-08 |  |  |
| SDR-2-CON-RW-ZA-2020 |  | Subgrade layer works | 20d | 2026-09-15 | 2026-10-08 | SDR-2-CON-RW-ZA-2010 | 17d |
|  | 9 | **Earth Works Plot** |  | 2026-10-10 | 2026-12-22 |  |  |
| SDR-2-CON-RW-ZA-2030 |  | Plot Excavation for cuttings (all types of soil) | 21d | 2026-10-10 | 2026-11-02 | SDR-2-CON-RW-ZA-2000, SDR-2-CON-RW-ZA-2020 | 35d |
| SDR-2-CON-RW-ZA-3190 |  | Embankments to the Plot 1 Layer | 21d | 2026-11-03 | 2026-11-26 | SDR-2-CON-RW-ZA-2030 | 35d |
| SDR-2-CON-RW-ZA-2040 |  | Embankments to the Plot 2 Layer | 21d | 2026-11-29 | 2026-12-22 | SDR-2-CON-RW-ZA-3110, SDR-2-CON-RW-ZA-3190 FS+1d | 35d |
|  | 2 | **Base Course** |  | 2026-10-10 | 2026-10-18 |  |  |
| SDR-2-CON-RW-ZA-2050 |  | Aggregate base course layer | 8d | 2026-10-10 | 2026-10-18 | SDR-2-CON-RW-ZA-2020 | 28d |
|  | 8 | **Demolition Work** |  | 2026-10-19 | 2026-10-20 |  |  |
| SDR-2-CON-RW-ZA-2060 |  | Milling of wearing course | 2d | 2026-10-19 | 2026-10-20 | SDR-2-CON-RW-ZA-2050 | 28d |
|  | 3 | **Asphalt Works** |  | 2026-11-04 | 2026-11-30 |  |  |
| SDR-2-CON-RW-ZA-2070 |  | Asphalt works 1st Layer with MC-01 | 10d | 2026-11-04 | 2026-11-15 | SDR-2-CON-RW-ZA-2050, SDR-2-CON-RW-ZA-2060, SDR-2-CON-RW-ZA-1890 FS+3d | 16d |
| SDR-2-CON-RW-ZA-2080 |  | Asphalt works 2nd layer with RC-02 | 13d | 2026-11-16 | 2026-11-30 | SDR-2-CON-RW-ZA-2070 | 16d |
|  | 4 | **Kerbstone Installation** |  | 2026-10-10 | 2026-12-24 |  |  |
| SDR-2-CON-RW-ZA-3470 |  | Kerbstone Installation "all Types" Part 1 | 18d | 2026-10-10 | 2026-10-29 | SDR-2-CON-RW-ZA-2020 | 17d |
| SDR-2-CON-RW-ZA-2090 |  | Kerbstone Installation "all Types" Part 2 | 21d | 2026-12-01 | 2026-12-24 | SDR-2-CON-RW-ZA-2080 | 16d |
|  | 5 | **Interlock Installation** |  | 2026-12-26 | 2027-01-18 |  |  |
| SDR-2-CON-RW-ZA-2100 |  | Interlock Installation | 21d | 2026-12-26 | 2027-01-18 | SDR-2-CON-RW-ZA-2090 | 16d |
|  | 6 | **Road Marking** |  | 2027-01-19 | 2027-02-20 |  |  |
| SDR-2-CON-RW-ZA-2110 |  | Retroreflective Thermoplastic White Traffic lines | 14d | 2027-01-19 | 2027-02-03 | SDR-2-CON-RW-ZA-2100 | 16d |
| SDR-2-CON-RW-ZA-2120 |  | Retroreflective Thermoplastic Yellow, Traffic lines | 14d | 2027-02-04 | 2027-02-20 | SDR-2-CON-RW-ZA-2110 | 16d |
|  | 7 | **Traffic Signage** |  | 2027-02-21 | 2027-03-21 |  |  |
| SDR-2-CON-RW-ZA-2130 |  | Single post-Traffic signs Installation | 20d | 2027-02-21 | 2027-03-21 | SDR-2-CON-RW-ZA-2120, SDR-2-CON-RW-ZA-2040 | 16d |
|  | 6 | **ROAD WORKS IN ( PH2-A-MCF0 )** |  | 2026-06-09 | 2027-04-03 |  |  |
|  | 1 | **Earth Works Road** |  | 2026-06-09 | 2026-07-01 |  |  |
| SDR-2-CON-RW-ZA-2140 |  | Roadway Excavation and cuttings | 20d | 2026-06-09 | 2026-07-01 | SDR-2-PRO-DES-C-1000, SDR-2-CON-RW-ZA-2000 | 1d |
|  | 10 | **Backfilling Works** |  | 2026-07-09 | 2026-10-11 |  |  |
| SDR-2-CON-RW-ZA-3200 |  | Embankments to the Road 1 Layer | 21d | 2026-07-09 | 2026-08-02 | SDR-2-CON-RW-ZA-2140 FS+6d | 5d |
| SDR-2-CON-RW-ZA-3210 |  | Embankments to the Road 2 Layer | 21d | 2026-08-03 | 2026-08-26 | SDR-2-CON-RW-ZA-3200 | 5d |
| SDR-2-CON-RW-ZA-3220 |  | Embankments to the Road 3 Layer | 19d | 2026-08-27 | 2026-09-17 | SDR-2-CON-RW-ZA-3210 | 5d |
| SDR-2-CON-RW-ZA-2150 |  | Embankments to the Road 4 Layer | 19d | 2026-09-19 | 2026-10-11 | SDR-2-CON-RW-ZA-3220 | 5d |
|  | 11 | **Subgrade** |  | 2026-10-12 | 2026-11-03 |  |  |
| SDR-2-CON-RW-ZA-2160 |  | Subgrade layer works | 20d | 2026-10-12 | 2026-11-03 | SDR-2-CON-RW-ZA-2150 | 5d |
|  | 9 | **Earth Works Plot** |  | 2026-11-04 | 2027-01-16 |  |  |
| SDR-2-CON-RW-ZA-2170 |  | Plot Excavation for cuttings (all types of soil) | 20d | 2026-11-04 | 2026-11-26 | SDR-2-CON-RW-ZA-3460, SDR-2-CON-RW-ZA-2140, SDR-2-CON-RW-ZA-2160 | 11d |
| SDR-2-CON-RW-ZA-3230 |  | Embankments to the Plot 1 Layer | 21d | 2026-11-28 | 2026-12-21 | SDR-2-CON-RW-ZA-2170 | 17d |
| SDR-2-CON-RW-ZA-2180 |  | Embankments to the Plot 2 Layer | 21d | 2026-12-23 | 2027-01-16 | SDR-2-CON-RW-ZA-1900, SDR-2-CON-RW-ZA-3110, SDR-2-CON-RW-ZA-3230 FS+1d | 17d |
|  | 2 | **Base Course** |  | 2026-11-04 | 2026-11-17 |  |  |
| SDR-2-CON-RW-ZA-2190 |  | Aggregate base course layer | 12d | 2026-11-04 | 2026-11-17 | SDR-2-CON-RW-ZA-2160 | 5d |
|  | 8 | **Demolition Work** |  | 2026-11-18 | 2026-11-19 |  |  |
| SDR-2-CON-RW-ZA-2200 |  | Milling of wearing course | 2d | 2026-11-18 | 2026-11-19 | SDR-2-CON-RW-ZA-3470 SS, SDR-2-CON-RW-ZA-2190 | 5d |
|  | 3 | **Asphalt Works** |  | 2026-11-21 | 2026-12-13 |  |  |
| SDR-2-CON-RW-ZA-2210 |  | Asphalt works 1st Layer with MC-01 | 8d | 2026-11-21 | 2026-11-29 | SDR-2-CON-RW-ZA-2030 SS, SDR-2-CON-RW-ZA-3150 SS, SDR-2-CON-RW-ZA-2200 | 5d |
| SDR-2-CON-RW-ZA-2220 |  | Asphalt works 2nd layer with RC-02 | 12d | 2026-11-30 | 2026-12-13 | SDR-2-CON-RW-ZA-2210 | 5d |
|  | 4 | **Kerbstone Installation** |  | 2026-11-04 | 2027-01-06 |  |  |
| SDR-2-CON-RW-ZA-3480 |  | Kerbstone Installation "all Types" Part 1 | 18d | 2026-11-04 | 2026-11-24 | SDR-2-CON-RW-ZA-2160 | 5d |
| SDR-2-CON-RW-ZA-2230 |  | Kerbstone Installation "all Types" Part 2 | 21d | 2026-12-14 | 2027-01-06 | SDR-2-CON-RW-ZA-2220 | 5d |
|  | 5 | **Interlock Installation** |  | 2027-01-07 | 2027-01-31 |  |  |

| ID | WBS | Task | Duration | Start | Finish | Predecessors | Total float |
| --- | --- | --- | --- | --- | --- | --- | --- |
| SDR-2-CON-RW-ZA-2240 |  | Interlock Installation | 21d | 2027-01-07 | 2027-01-31 | SDR-2-CON-RW-ZA-2230 | 5d |
|  | 6 | **Road Marking** |  | 2027-02-01 | 2027-03-06 |  |  |
| SDR-2-CON-RW-ZA-2250 |  | Retroreflective Thermoplastic White Traffic lines | 14d | 2027-02-01 | 2027-02-16 | SDR-2-CON-RW-ZA-2240 | 5d |
| SDR-2-CON-RW-ZA-2260 |  | Retroreflective Thermoplastic Yellow, Traffic lines | 14d | 2027-02-17 | 2027-03-06 | SDR-2-CON-RW-ZA-2250 | 5d |
|  | 7 | **Traffic Signage** |  | 2027-03-07 | 2027-04-03 |  |  |
| SDR-2-CON-RW-ZA-2270 |  | Single post-Traffic signs Installation | 20d | 2027-03-07 | 2027-04-03 | SDR-2-CON-RW-ZA-2260, SDR-2-CON-RW-ZA-2180 FS+1d | 5d |
|  | 9 | **ROAD WORKS IN ( PH2-A-MCG0 )** |  | 2026-06-14 | 2027-04-17 |  |  |
|  | 1 | **Earth Works Road** |  | 2026-06-14 | 2026-07-06 |  |  |
| SDR-2-CON-RW-ZA-2280 |  | Roadway Excavation and cuttings | 20d | 2026-06-14 | 2026-07-06 | SDR-2-CON-RW-ZA-2140 SS+4d | 1d |
|  | 10 | **Backfilling Works** |  | 2026-07-08 | 2026-10-14 |  |  |
| SDR-2-CON-RW-ZA-3240 |  | Embankments to the Road 1 Layer | 21d | 2026-07-08 | 2026-08-01 | SDR-2-CON-RW-ZA-2280 FS+1d | 1d |
| SDR-2-CON-RW-ZA-3250 |  | Embankments to the Road 2 Layer | 21d | 2026-08-02 | 2026-08-25 | SDR-2-CON-RW-ZA-3240 | 1d |
| SDR-2-CON-RW-ZA-3260 |  | Embankments to the Road 3 Layer | 21d | 2026-08-26 | 2026-09-19 | SDR-2-CON-RW-ZA-3250 | 1d |
| SDR-2-CON-RW-ZA-2290 |  | Embankments to the Road 4 Layer | 21d | 2026-09-20 | 2026-10-14 | SDR-2-CON-RW-ZA-3260 | 1d |
|  | 11 | **Subgrade** |  | 2026-10-15 | 2026-11-04 |  |  |
| SDR-2-CON-RW-ZA-2300 |  | Subgrade layer works | 18d | 2026-10-15 | 2026-11-04 | SDR-2-CON-RW-ZA-2290 | 1d |
|  | 9 | **Earth Works Plot** |  | 2026-11-05 | 2027-01-17 |  |  |
| SDR-2-CON-RW-ZA-2310 |  | Plot Excavation for cuttings (all types of soil) | 21d | 2026-11-05 | 2026-11-29 | SDR-2-CON-RW-ZA-2280, SDR-2-CON-RW-ZA-2300 | 8d |
| SDR-2-CON-RW-ZA-3270 |  | Embankments to the Plot 1 Layer | 21d | 2026-11-30 | 2026-12-23 | SDR-2-CON-RW-ZA-2310 | 8d |
| SDR-2-CON-RW-ZA-2320 |  | Embankments to the Plot 2 Layer | 21d | 2026-12-24 | 2027-01-17 | SDR-2-CON-RW-ZA-3270 FF, SDR-2-CON-RW-ZA-3230, SDR-2-CON-RW-ZA-3190, SDR-2-CON-RW-ZA-3270 | 19d |
|  | 2 | **Base Course** |  | 2026-11-05 | 2026-11-12 |  |  |
| SDR-2-CON-RW-ZA-2330 |  | Aggregate base course layer | 7d | 2026-11-05 | 2026-11-12 | SDR-2-CON-RW-ZA-2300 | 1d |
|  | 8 | **Demolition Work** |  | 2026-11-14 | 2026-11-15 |  |  |
| SDR-2-CON-RW-ZA-2340 |  | Milling of wearing course | 2d | 2026-11-14 | 2026-11-15 | SDR-2-CON-RW-ZA-3480 SS, SDR-2-CON-RW-ZA-2330 | 1d |
|  | 3 | **Asphalt Works** |  | 2026-11-16 | 2026-12-12 |  |  |
| SDR-2-CON-RW-ZA-2350 |  | Asphalt works 1st Layer with MC-01 | 3d | 2026-11-16 | 2026-11-18 | SDR-2-CON-RW-ZA-3490 SS, SDR-2-CON-RW-ZA-2330, SDR-2-CON-RW-ZA-2340, SDR-2-CON-RW-ZA-2170 SS | 1d |
| SDR-2-CON-RW-ZA-2360 |  | Asphalt works 2nd layer with RC-02 | 11d | 2026-11-30 | 2026-12-12 | SDR-2-CON-RW-ZA-2310, SDR-2-CON-RW-ZA-2350 | 29d |
|  | 4 | **Kerbstone Installation** |  | 2026-11-05 | 2027-01-05 |  |  |
| SDR-2-CON-RW-ZA-3490 |  | Kerbstone Installation "all Types" Part 1 | 18d | 2026-11-05 | 2026-11-25 | SDR-2-CON-RW-ZA-2300 | 10d |
| SDR-2-CON-RW-ZA-2370 |  | Kerbstone Installation "all Types" Part 2 | 21d | 2026-12-13 | 2027-01-05 | SDR-2-CON-RW-ZA-2360 | 29d |
|  | 5 | **Interlock Installation** |  | 2027-01-21 | 2027-02-14 |  |  |
| SDR-2-CON-RW-ZA-2380 |  | Interlock Installation | 21d | 2027-01-21 | 2027-02-14 | SDR-2-CON-RW-ZA-2180 FS+4d, SDR-2-CON-RW-ZA-2370 | 17d |
|  | 6 | **Road Marking** |  | 2027-02-15 | 2027-03-24 |  |  |
| SDR-2-CON-RW-ZA-2390 |  | Retroreflective Thermoplastic White Traffic lines | 14d | 2027-02-15 | 2027-03-03 | SDR-2-CON-RW-ZA-2380 | 17d |
| SDR-2-CON-RW-ZA-2400 |  | Retroreflective Thermoplastic Yellow, Traffic lines | 14d | 2027-03-04 | 2027-03-24 | SDR-2-CON-RW-ZA-2390 | 17d |
|  | 7 | **Traffic Signage** |  | 2027-03-25 | 2027-04-17 |  |  |
| SDR-2-CON-RW-ZA-2410 |  | Single post-Traffic signs Installation | 20d | 2027-03-25 | 2027-04-17 | SDR-2-CON-RW-ZA-2400, SDR-2-CON-RW-ZA-2320 SS+2d, SDR-2-CON-RW-ZA-2320 | 17d |
|  | 10 | **ROAD WORKS IN ( PH2-A-MCH0 )** |  | 2026-06-16 | 2027-04-06 |  |  |
|  | 1 | **Earth Works Road** |  | 2026-06-16 | 2026-07-09 |  |  |
| SDR-2-CON-RW-ZA-2420 |  | Roadway Excavation and cuttings | 21d | 2026-06-16 | 2026-07-09 | SDR-2-CON-RW-ZA-2280 SS+2d | 1d |
|  | 10 | **Backfilling Works** |  | 2026-07-14 | 2026-10-20 |  |  |
| SDR-2-CON-RW-ZA-3280 |  | Embankments to the Road 1 Layer | 21d | 2026-07-14 | 2026-08-06 | SDR-2-CON-RW-ZA-2420 FS+3d | 1d |
| SDR-2-CON-RW-ZA-3290 |  | Embankments to the Road 2 Layer | 21d | 2026-08-08 | 2026-08-31 | SDR-2-CON-RW-ZA-3280 | 1d |
| SDR-2-CON-RW-ZA-3300 |  | Embankments to the Road 3 Layer | 21d | 2026-09-01 | 2026-09-26 | SDR-2-CON-RW-ZA-3290 | 1d |
| SDR-2-CON-RW-ZA-2430 |  | Embankments to the Road 4 Layer | 21d | 2026-09-27 | 2026-10-20 | SDR-2-CON-RW-ZA-3300 | 1d |
|  | 11 | **Subgrade** |  | 2026-10-21 | 2026-10-29 |  |  |
| SDR-2-CON-RW-ZA-2440 |  | Subgrade layer works | 8d | 2026-10-21 | 2026-10-29 | SDR-2-CON-RW-ZA-2430 | 1d |
|  | 9 | **Earth Works Plot** |  | 2026-10-31 | 2027-01-11 |  |  |
| SDR-2-CON-RW-ZA-2450 |  | Plot Excavation for cuttings (all types of soil) | 21d | 2026-10-31 | 2026-11-23 | SDR-2-CON-RW-ZA-2420, SDR-2-CON-RW-ZA-2440 | 1d |
| SDR-2-CON-RW-ZA-3310 |  | Embankments to the Plot 1 Layer | 21d | 2026-11-24 | 2026-12-17 | SDR-2-CON-RW-ZA-2450 | 1d |
| SDR-2-CON-RW-ZA-2460 |  | Embankments to the Plot 2 Layer | 21d | 2026-12-19 | 2027-01-11 | SDR-2-CON-RW-ZA-3310 | 1d |
|  | 2 | **Base Course** |  | 2026-10-31 | 2026-11-16 |  |  |
| SDR-2-CON-RW-ZA-2470 |  | Aggregate base course layer | 15d | 2026-10-31 | 2026-11-16 | SDR-2-CON-RW-ZA-2440 | 8d |
|  | 8 | **Demolition Work** |  | 2026-11-17 | 2026-11-18 |  |  |
| SDR-2-CON-RW-ZA-2480 |  | Milling of wearing course | 2d | 2026-11-17 | 2026-11-18 | SDR-2-CON-RW-ZA-2470 | 8d |
|  | 3 | **Asphalt Works** |  | 2026-11-21 | 2026-12-16 |  |  |
| SDR-2-CON-RW-ZA-2490 |  | Asphalt works 1st Layer with MC-01 | 12d | 2026-11-21 | 2026-12-03 | SDR-2-CON-RW-ZA-3500, SDR-2-CON-RW-ZA-2470, SDR-2-CON-RW-ZA-2480 | 11d |
| SDR-2-CON-RW-ZA-2500 |  | Asphalt works 2nd layer with RC-02 | 11d | 2026-12-05 | 2026-12-16 | SDR-2-CON-RW-ZA-2490 | 11d |
|  | 4 | **Kerbstone Installation** |  | 2026-10-31 | 2027-01-10 |  |  |
| SDR-2-CON-RW-ZA-3500 |  | Kerbstone Installation "all Types" Part 1 | 18d | 2026-10-31 | 2026-11-19 | SDR-2-CON-RW-ZA-2440 | 11d |
| SDR-2-CON-RW-ZA-2510 |  | Kerbstone Installation "all Types" Part 2 | 21d | 2026-12-17 | 2027-01-10 | SDR-2-CON-RW-ZA-2500 | 11d |
|  | 5 | **Interlock Installation** |  | 2027-01-11 | 2027-02-03 |  |  |
| SDR-2-CON-RW-ZA-2520 |  | Interlock Installation | 21d | 2027-01-11 | 2027-02-03 | SDR-2-CON-RW-ZA-2040, SDR-2-CON-RW-ZA-2510 | 19d |
|  | 6 | **Road Marking** |  | 2027-02-04 | 2027-03-14 |  |  |
| SDR-2-CON-RW-ZA-2530 |  | Retroreflective Thermoplastic White Traffic lines | 14d | 2027-02-04 | 2027-02-20 | SDR-2-CON-RW-ZA-2520 | 19d |
| SDR-2-CON-RW-ZA-2540 |  | Retroreflective Thermoplastic Yellow, Traffic lines | 14d | 2027-02-21 | 2027-03-14 | SDR-2-CON-RW-ZA-2530 | 19d |
|  | 7 | **Traffic Signage** |  | 2027-03-15 | 2027-04-06 |  |  |
| SDR-2-CON-RW-ZA-2550 |  | Single post-Traffic signs Installation | 20d | 2027-03-15 | 2027-04-06 | SDR-2-CON-RW-ZA-2540, SDR-2-CON-RW-ZA-2460 | 19d |
|  | 11 | **ROAD WORKS IN ( PH2-ART-MC00 )** |  | 2026-06-18 | 2027-04-07 |  |  |
|  | 1 | **Earth Works Road** |  | 2026-06-18 | 2026-07-12 |  |  |

| ID | WBS | Task | Duration | Start | Finish | Predecessors | Total float |
| --- | --- | --- | --- | --- | --- | --- | --- |
| SDR-2-CON-RW-ZA-2560 |  | Roadway Excavation and cuttings | 21d | 2026-06-18 | 2026-07-12 | SDR-2-CON-RW-ZA-2420 SS+2d | 1d |
|  | 10 | **Backfilling Works** |  | 2026-07-15 | 2026-10-21 |  |  |
| SDR-2-CON-RW-ZA-3320 |  | Embankments to the Road 1 Layer | 21d | 2026-07-15 | 2026-08-08 | SDR-2-CON-RW-ZA-2560 FS+2d | 1d |
| SDR-2-CON-RW-ZA-3330 |  | Embankments to the Road 2 Layer | 21d | 2026-08-09 | 2026-09-01 | SDR-2-CON-RW-ZA-3320 | 1d |
| SDR-2-CON-RW-ZA-3340 |  | Embankments to the Road 3 Layer | 21d | 2026-09-02 | 2026-09-27 | SDR-2-CON-RW-ZA-3330 | 1d |
| SDR-2-CON-RW-ZA-2570 |  | Embankments to the Road 4 Layer | 21d | 2026-09-28 | 2026-10-21 | SDR-2-CON-RW-ZA-3340 | 1d |
|  | 11 | **Subgrade** |  | 2026-10-22 | 2026-11-05 |  |  |
| SDR-2-CON-RW-ZA-2580 |  | Subgrade layer works | 13d | 2026-10-22 | 2026-11-05 | SDR-2-CON-RW-ZA-2570 | 1d |
|  | 9 | **Earth Works Plot** |  | 2026-11-07 | 2027-01-18 |  |  |
| SDR-2-CON-RW-ZA-2590 |  | Plot Excavation for cuttings (all types of soil) | 21d | 2026-11-07 | 2026-11-30 | SDR-2-CON-RW-ZA-2560, SDR-2-CON-RW-ZA-2580 | 7d |
| SDR-2-CON-RW-ZA-3350 |  | Embankments to the Plot 1 Layer | 21d | 2026-12-01 | 2026-12-24 | SDR-2-CON-RW-ZA-2590 | 11d |
| SDR-2-CON-RW-ZA-2600 |  | Embankments to the Plot 2 Layer | 21d | 2026-12-26 | 2027-01-18 | SDR-2-CON-RW-ZA-3350 | 11d |
|  | 2 | **Base Course** |  | 2026-11-07 | 2026-11-18 |  |  |
| SDR-2-CON-RW-ZA-2610 |  | Aggregate base course layer | 11d | 2026-11-07 | 2026-11-18 | SDR-2-CON-RW-ZA-2580 | 1d |
|  | 8 | **Demolition Work** |  | 2026-11-19 | 2026-11-21 |  |  |
| SDR-2-CON-RW-ZA-2620 |  | Milling of wearing course | 2d | 2026-11-19 | 2026-11-21 | SDR-2-CON-RW-ZA-2610 | 1d |
|  | 3 | **Asphalt Works** |  | 2026-11-22 | 2026-12-17 |  |  |
| SDR-2-CON-RW-ZA-2630 |  | Asphalt works 1st Layer with MC-01 | 12d | 2026-11-22 | 2026-12-05 | SDR-2-CON-RW-ZA-2620 | 1d |
| SDR-2-CON-RW-ZA-2640 |  | Asphalt works 2nd layer with RC-02 | 11d | 2026-12-06 | 2026-12-17 | SDR-2-CON-RW-ZA-2630, SDR-2-CON-RW-ZA-2450 | 1d |
|  | 4 | **Kerbstone Installation** |  | 2026-11-07 | 2027-01-11 |  |  |
| SDR-2-CON-RW-ZA-3510 |  | Kerbstone Installation "all Types" Part 1 | 18d | 2026-11-07 | 2026-11-26 | SDR-2-CON-RW-ZA-2580 | 8d |
| SDR-2-CON-RW-ZA-2650 |  | Kerbstone Installation "all Types" Part 2 | 21d | 2026-12-19 | 2027-01-11 | SDR-2-CON-RW-ZA-3310, SDR-2-CON-RW-ZA-2640 | 1d |
|  | 5 | **Interlock Installation** |  | 2027-01-12 | 2027-02-04 |  |  |
| SDR-2-CON-RW-ZA-2660 |  | Interlock Installation | 21d | 2027-01-12 | 2027-02-04 | SDR-2-CON-RW-ZA-2460, SDR-2-CON-RW-ZA-2650 | 1d |
|  | 6 | **Road Marking** |  | 2027-02-06 | 2027-03-20 |  |  |
| SDR-2-CON-RW-ZA-2670 |  | Retroreflective Thermoplastic White Traffic lines | 17d | 2027-02-06 | 2027-02-25 | SDR-2-CON-RW-ZA-2660 | 1d |
| SDR-2-CON-RW-ZA-2680 |  | Retroreflective Thermoplastic Yellow, Traffic lines | 15d | 2027-02-27 | 2027-03-20 | SDR-2-CON-RW-ZA-2670 | 1d |
|  | 7 | **Traffic Signage** |  | 2027-03-21 | 2027-04-07 |  |  |
| SDR-2-CON-RW-ZA-2690 |  | Single post-Traffic signs Installation | 16d | 2027-03-21 | 2027-04-07 | SDR-2-CON-RW-ZA-2680 | 1d |
|  | 12 | **ROAD WORKS IN ( PH2-ART-MC10 )** |  | 2026-06-21 | 2027-04-13 |  |  |
|  | 1 | **Earth Works Road** |  | 2026-06-21 | 2026-07-13 |  |  |
| SDR-2-CON-RW-ZA-2700 |  | Roadway Excavation and cuttings | 20d | 2026-06-21 | 2026-07-13 | SDR-2-CON-RW-ZA-2560 SS+2d | 2d |
|  | 10 | **Backfilling Works** |  | 2026-07-19 | 2026-10-26 |  |  |
| SDR-2-CON-RW-ZA-3360 |  | Embankments to the Road 1 Layer | 21d | 2026-07-19 | 2026-08-11 | SDR-2-CON-RW-ZA-2700 FS+4d | 2d |
| SDR-2-CON-RW-ZA-3370 |  | Embankments to the Road 2 Layer | 21d | 2026-08-12 | 2026-09-05 | SDR-2-CON-RW-ZA-3360 | 2d |
| SDR-2-CON-RW-ZA-3380 |  | Embankments to the Road 3 Layer | 21d | 2026-09-06 | 2026-09-30 | SDR-2-CON-RW-ZA-3370 | 2d |
| SDR-2-CON-RW-ZA-2710 |  | Embankments to the Road 4 Layer | 21d | 2026-10-03 | 2026-10-26 | SDR-2-CON-RW-ZA-3380 FS+1d | 2d |
|  | 11 | **Subgrade** |  | 2026-10-27 | 2026-11-09 |  |  |
| SDR-2-CON-RW-ZA-2720 |  | Subgrade layer works | 12d | 2026-10-27 | 2026-11-09 | SDR-2-CON-RW-ZA-2710 | 2d |
|  | 9 | **Earth Works Plot** |  | 2026-11-10 | 2027-01-21 |  |  |
| SDR-2-CON-RW-ZA-2730 |  | Plot Excavation for cuttings (all types of soil) | 21d | 2026-11-10 | 2026-12-03 | SDR-2-CON-RW-ZA-2700, SDR-2-CON-RW-ZA-2720 | 4d |
| SDR-2-CON-RW-ZA-3390 |  | Embankments to the Plot 1 Layer | 21d | 2026-12-05 | 2026-12-28 | SDR-2-CON-RW-ZA-3510 FS+2d, SDR-2-CON-RW-ZA-2590, SDR-2-CON-RW-ZA-2730 | 4d |
| SDR-2-CON-RW-ZA-2740 |  | Embankments to the Plot 2 Layer | 21d | 2026-12-29 | 2027-01-21 | SDR-2-CON-RW-ZA-3390 | 9d |
|  | 2 | **Base Course** |  | 2026-11-10 | 2026-11-22 |  |  |
| SDR-2-CON-RW-ZA-2750 |  | Aggregate base course layer | 11d | 2026-11-10 | 2026-11-22 | SDR-2-CON-RW-ZA-2720 | 10d |
|  | 8 | **Demolition Work** |  | 2026-11-23 | 2026-11-24 |  |  |
| SDR-2-CON-RW-ZA-2760 |  | Milling of wearing course | 2d | 2026-11-23 | 2026-11-24 | SDR-2-CON-RW-ZA-2750 | 10d |
|  | 3 | **Asphalt Works** |  | 2026-11-25 | 2027-01-16 |  |  |
| SDR-2-CON-RW-ZA-2770 |  | Asphalt works 1st Layer with MC-01 | 10d | 2026-11-25 | 2026-12-06 | SDR-2-CON-RW-ZA-2750, SDR-2-CON-RW-ZA-2760 | 10d |
| SDR-2-CON-RW-ZA-2780 |  | Asphalt works 2nd layer with RC-02 | 14d | 2026-12-07 | 2026-12-22 | SDR-2-CON-RW-ZA-2770 | 10d |
| SDR-2-CON-RW-ZA-2850 |  | Asphalt Works 3 rd Layer with RC-02 | 21d | 2026-12-23 | 2027-01-16 | SDR-2-CON-RW-ZA-2780 | 10d |
|  | 4 | **Kerbstone Installation** |  | 2026-11-10 | 2027-02-09 |  |  |
| SDR-2-CON-RW-ZA-3520 |  | Kerbstone Installation "all Types" Part 1 | 18d | 2026-11-10 | 2026-11-30 | SDR-2-CON-RW-ZA-2720 | 2d |
| SDR-2-CON-RW-ZA-2790 |  | Kerbstone Installation "all Types" Part 2 | 21d | 2027-01-17 | 2027-02-09 | SDR-2-CON-RW-ZA-2040 FS+2d, SDR-2-CON-RW-ZA-2850, SDR-2-CON-RW-ZA-2850 FF | 20d |
|  | 5 | **Interlock Installation** |  | 2027-02-10 | 2027-03-07 |  |  |
| SDR-2-CON-RW-ZA-2800 |  | Interlock Installation | 21d | 2027-02-10 | 2027-03-07 | SDR-2-CON-RW-ZA-2790 | 20d |
|  | 6 | **Road Marking** |  | 2027-03-08 | 2027-03-30 |  |  |
| SDR-2-CON-RW-ZA-2810 |  | Retroreflective Thermoplastic White Traffic lines | 8d | 2027-03-08 | 2027-03-21 | SDR-2-CON-RW-ZA-2800 | 20d |
| SDR-2-CON-RW-ZA-2820 |  | Retroreflective Thermoplastic Yellow, Traffic lines | 8d | 2027-03-22 | 2027-03-30 | SDR-2-CON-RW-ZA-2810 | 20d |
|  | 7 | **Traffic Signage** |  | 2027-03-31 | 2027-04-13 |  |  |
| SDR-2-CON-RW-ZA-2830 |  | Single post-Traffic signs Installation | 12d | 2027-03-31 | 2027-04-13 | SDR-2-CON-RW-ZA-2820, SDR-2-CON-RW-ZA-2740 | 20d |
|  | ZG | **ZONE G** |  | 2026-02-07 | 2027-04-14 |  |  |
|  | 14 | **GENERAL WORKS** |  | 2026-02-07 | 2026-03-16 |  |  |
|  | 10 | **Cleaning and removal of organic materials in Zone A** |  | 2026-02-07 | 2026-02-25 |  |  |
| SDR-2-CON-RW-ZG-1000 |  | Cleaning and removal of organic materials in Zone G | 17d | 2026-02-07 | 2026-02-25 | SDR-2-MOBL-1060 | 12d |
|  | 12 | **Surveying works Zone A** |  | 2026-02-26 | 2026-03-16 |  |  |
| SDR-2-CON-RW-ZG-1010 |  | Surveying works Zone G | 16d | 2026-02-26 | 2026-03-16 | SDR-2-CON-RW-ZG-1000 | 12d |
|  | 5 | **ROAD WORKS IN ( PH2-COL-MC50 )** |  | 2026-03-17 | 2027-04-14 |  |  |
|  | 1 | **Earth Works Road** |  | 2026-03-17 | 2026-04-14 |  |  |
| SDR-2-CON-RW-ZG-1020 |  | Roadway Excavation and cuttings | 21d | 2026-03-17 | 2026-04-14 | SDR-2-CON-RW-ZG-1010 | 12d |

| ID | WBS | Task | Duration | Start | Finish | Predecessors | Total float |
| --- | --- | --- | --- | --- | --- | --- | --- |
|  | 10 | **Backfilling Works** |  | 2026-04-15 | 2026-08-02 |  |  |
| SDR-2-CON-RW-ZG-2220 |  | Embankments to the Road 1 Layer | 21d | 2026-04-15 | 2026-05-09 | SDR-2-CON-RW-ZG-1020 | 12d |
| SDR-2-CON-RW-ZG-2230 |  | Embankments to the Road 2 Layer | 21d | 2026-05-10 | 2026-06-07 | SDR-2-CON-RW-ZG-2220 | 12d |
| SDR-2-CON-RW-ZG-2240 |  | Embankments to the Road 3 Layer | 21d | 2026-06-08 | 2026-07-01 | SDR-2-CON-RW-ZG-2230 | 12d |
| SDR-2-CON-RW-ZG-1030 |  | Embankments to the Road 4 Layer | 21d | 2026-07-09 | 2026-08-02 | SDR-2-CON-RW-ZG-2240 FS+6d | 12d |
|  | 11 | **Subgrade** |  | 2026-08-03 | 2026-08-26 |  |  |
| SDR-2-CON-RW-ZG-1040 |  | Subgrade layer works | 21d | 2026-08-03 | 2026-08-26 | SDR-2-CON-RW-ZG-1030 | 12d |
|  | 9 | **Earth Works Plot** |  | 2026-08-27 | 2027-01-18 |  |  |
| SDR-2-CON-RW-ZG-1050 |  | Plot Excavation for cuttings (all types of soil) | 21d | 2026-08-27 | 2026-09-20 | SDR-2-CON-RW-ZG-1020, SDR-2-CON-RW-ZG-1040 | 26d |
| SDR-2-CON-RW-ZG-2250 |  | Embankments to the Plot 1 Layer | 21d | 2026-09-21 | 2026-10-15 | SDR-2-CON-RW-ZG-1050 | 27d |
| SDR-2-CON-RW-ZG-2260 |  | Embankments to the Plot 2 Layer | 21d | 2026-12-01 | 2026-12-24 | SDR-2-CON-RW-ZA-3520, SDR-2-CON-RW-ZG-2250 | 2d |
| SDR-2-CON-RW-ZG-1060 |  | Embankments to the Plot 3 Layer | 21d | 2026-12-26 | 2027-01-18 | SDR-2-CON-RW-ZG-2260 | 2d |
|  | 2 | **Base Course** |  | 2026-08-27 | 2026-09-20 |  |  |
| SDR-2-CON-RW-ZG-1070 |  | Aggregate base course layer | 21d | 2026-08-27 | 2026-09-20 | SDR-2-CON-RW-ZG-1040 | 12d |
|  | 8 | **Demolition Work** |  | 2026-09-21 | 2026-10-14 |  |  |
| SDR-2-CON-RW-ZG-1080 |  | Removal of curbstone | 11d | 2026-09-21 | 2026-10-04 | SDR-2-CON-RW-ZG-1070 | 12d |
| SDR-2-CON-RW-ZG-1090 |  | Milling of wearing course | 9d | 2026-10-05 | 2026-10-14 | SDR-2-CON-RW-ZG-1080 | 12d |
|  | 3 | **Asphalt Works** |  | 2026-10-15 | 2026-11-30 |  |  |
| SDR-2-CON-RW-ZG-1100 |  | Asphalt works 1st Layer with MC-01 | 19d | 2026-10-15 | 2026-11-05 | SDR-2-CON-RW-ZG-2550, SDR-2-CON-RW-ZG-1070, SDR-2-CON-RW-ZG-1090 | 12d |
| SDR-2-CON-RW-ZG-1110 |  | Asphalt works 2nd layer with RC-02 | 21d | 2026-11-07 | 2026-11-30 | SDR-2-CON-RW-ZG-1100 | 12d |
|  | 4 | **Kerbstone Installation** |  | 2026-09-21 | 2027-01-18 |  |  |
| SDR-2-CON-RW-ZG-2550 |  | Kerbstone Installation "all Types" Part 1 | 18d | 2026-09-21 | 2026-10-12 | SDR-2-CON-RW-ZG-1070 | 14d |
| SDR-2-CON-RW-ZG-1120 |  | Kerbstone Installation "all Types" Part 2 | 21d | 2026-12-26 | 2027-01-18 | SDR-2-CON-RW-ZA-3350, SDR-2-CON-RW-ZG-1110 | 11d |
|  | 5 | **Interlock Installation** |  | 2027-01-19 | 2027-02-11 |  |  |
| SDR-2-CON-RW-ZG-1130 |  | Interlock Installation | 21d | 2027-01-19 | 2027-02-11 | SDR-2-CON-RW-ZA-2600, SDR-2-CON-RW-ZG-1120 | 11d |
|  | 6 | **Road Marking** |  | 2027-02-13 | 2027-03-22 |  |  |
| SDR-2-CON-RW-ZG-1140 |  | Retroreflective Thermoplastic White Traffic lines | 14d | 2027-02-13 | 2027-03-01 | SDR-2-CON-RW-ZG-1130 | 11d |
| SDR-2-CON-RW-ZG-1150 |  | Retroreflective Thermoplastic Yellow, Traffic lines | 14d | 2027-03-02 | 2027-03-22 | SDR-2-CON-RW-ZG-1140 | 11d |
|  | 7 | **Traffic Signage** |  | 2027-03-23 | 2027-04-14 |  |  |
| SDR-2-CON-RW-ZG-1160 |  | Single post-Traffic signs Installation | 20d | 2027-03-23 | 2027-04-14 | SDR-2-CON-RW-ZG-1150, SDR-2-CON-RW-ZG-1060 | 11d |
|  | 1 | **ROAD WORKS IN ( PH2-G-MCA0 )** |  | 2026-03-29 | 2027-03-20 |  |  |
|  | 1 | **Earth Works Road** |  | 2026-03-29 | 2026-04-20 |  |  |
| SDR-2-CON-RW-ZG-1320 |  | Roadway Excavation and cuttings | 20d | 2026-03-29 | 2026-04-20 | SDR-2-CON-RW-ZG-1170 SS+3d | 19d |
|  | 10 | **Backfilling Works** |  | 2026-04-21 | 2026-08-31 |  |  |
| SDR-2-CON-RW-ZG-2310 |  | Embankments to the Road 1 Layer | 21d | 2026-04-21 | 2026-05-14 | SDR-2-CON-RW-ZG-1320 | 20d |
| SDR-2-CON-RW-ZG-2320 |  | Embankments to the Road 2 Layer | 21d | 2026-05-16 | 2026-06-13 | SDR-2-CON-RW-ZG-2310 | 20d |
| SDR-2-CON-RW-ZG-2330 |  | Embankments to the Road 3 Layer | 21d | 2026-06-20 | 2026-07-13 | SDR-2-CON-RW-ZG-2320 FS+5d | 20d |
| SDR-2-CON-RW-ZG-1330 |  | Embankments to the Road 4 Layer | 21d | 2026-08-08 | 2026-08-31 | SDR-2-PRO-DEL-E-1100, SDR-2-PRO-DEL-E-1020, SDR-2-PRO-DEL-E-1010, SDR-2-CON-RW-ZG-2330 FS+6d | 5d |
|  | 11 | **Subgrade** |  | 2026-09-07 | 2026-10-01 |  |  |
| SDR-2-CON-RW-ZG-1340 |  | Subgrade layer works | 21d | 2026-09-07 | 2026-10-01 | SDR-2-CON-RW-ZG-1330 FS+5d | 5d |
|  | 9 | **Earth Works Plot** |  | 2026-10-03 | 2026-12-14 |  |  |
| SDR-2-CON-RW-ZG-1350 |  | Plot Excavation for cuttings (all types of soil) | 21d | 2026-10-03 | 2026-10-26 | SDR-2-CON-RW-ZG-1320, SDR-2-CON-RW-ZG-1340 | 21d |
| SDR-2-CON-RW-ZG-2340 |  | Embankments to the Plot 1 Layer | 21d | 2026-10-27 | 2026-11-19 | SDR-2-CON-RW-ZG-1350 | 21d |
| SDR-2-CON-RW-ZG-1360 |  | Embankments to the Plot 2 Layer | 21d | 2026-11-21 | 2026-12-14 | SDR-2-CON-RW-ZG-2300, SDR-2-CON-RW-ZG-2340 | 23d |
|  | 2 | **Base Course** |  | 2026-10-03 | 2026-10-26 |  |  |
| SDR-2-CON-RW-ZG-1370 |  | Aggregate base course layer | 21d | 2026-10-03 | 2026-10-26 | SDR-2-CON-RW-ZG-1340 | 5d |
|  | 8 | **Demolition Work** |  | 2026-10-27 | 2026-11-14 |  |  |
| SDR-2-CON-RW-ZG-1380 |  | Removal of curbstone | 9d | 2026-10-27 | 2026-11-05 | SDR-2-CON-RW-ZG-1370 | 5d |
| SDR-2-CON-RW-ZG-1390 |  | Milling of wearing course | 7d | 2026-11-07 | 2026-11-14 | SDR-2-CON-RW-ZG-1380 | 5d |
|  | 3 | **Asphalt Works** |  | 2026-10-27 | 2026-11-30 |  |  |
| SDR-2-CON-RW-ZG-1400 |  | Asphalt works 1st Layer with MC-01 | 12d | 2026-10-27 | 2026-11-09 | SDR-2-CON-RW-ZG-1370 | 24d |
| SDR-2-CON-RW-ZG-1410 |  | Asphalt works 2nd layer with RC-02 | 18d | 2026-11-10 | 2026-11-30 | SDR-2-CON-RW-ZG-1400 | 24d |
|  | 4 | **Kerbstone Installation** |  | 2026-10-03 | 2026-12-24 |  |  |
| SDR-2-CON-RW-ZG-2570 |  | Kerbstone Installation "all Types" Part 1 | 18d | 2026-10-03 | 2026-10-22 | SDR-2-CON-RW-ZG-1340, SDR-2-CON-RW-ZG-2560 | 24d |
| SDR-2-CON-RW-ZG-1420 |  | Kerbstone Installation "all Types" Part 2 | 21d | 2026-12-01 | 2026-12-24 | SDR-2-CON-RW-ZG-1410, SDR-2-CON-RW-ZG-1390 | 24d |
|  | 5 | **Interlock Installation** |  | 2026-12-26 | 2027-01-17 |  |  |
| SDR-2-CON-RW-ZG-1430 |  | Interlock Installation | 20d | 2026-12-26 | 2027-01-17 | SDR-2-CON-RW-ZG-1420 | 24d |
|  | 6 | **Road Marking** |  | 2027-01-18 | 2027-02-18 |  |  |
| SDR-2-CON-RW-ZG-1440 |  | Retroreflective Thermoplastic White Traffic lines | 14d | 2027-01-18 | 2027-02-02 | SDR-2-CON-RW-ZG-1430 | 24d |
| SDR-2-CON-RW-ZG-1450 |  | Retroreflective Thermoplastic Yellow, Traffic lines | 14d | 2027-02-03 | 2027-02-18 | SDR-2-CON-RW-ZG-1440, SDR-2-CON-RW-ZG-1360 SS | 24d |
|  | 7 | **Traffic Signage** |  | 2027-02-20 | 2027-03-20 |  |  |
| SDR-2-CON-RW-ZG-1460 |  | Single post-Traffic signs Installation | 20d | 2027-02-20 | 2027-03-20 | SDR-2-CON-RW-ZG-1450, SDR-2-CON-RW-ZG-1360 | 24d |
|  | 6 | **ROAD WORKS IN ( PH2-ART-MC00 )** |  | 2026-03-25 | 2027-03-18 |  |  |
|  | 1 | **Earth Works Road** |  | 2026-03-25 | 2026-04-16 |  |  |
| SDR-2-CON-RW-ZG-1170 |  | Roadway Excavation and cuttings | 20d | 2026-03-25 | 2026-04-16 | SDR-2-CON-RW-ZG-1020 SS+3d | 19d |
|  | 10 | **Backfilling Works** |  | 2026-04-18 | 2026-07-28 |  |  |
| SDR-2-CON-RW-ZG-2270 |  | Embankments to the Road 1 Layer | 21d | 2026-04-18 | 2026-05-11 | SDR-2-CON-RW-ZG-1170 | 22d |
| SDR-2-CON-RW-ZG-2280 |  | Embankments to the Road 2 Layer | 21d | 2026-05-12 | 2026-06-09 | SDR-2-CON-RW-ZG-2270 | 22d |
| SDR-2-CON-RW-ZG-2290 |  | Embankments to the Road 3 Layer | 21d | 2026-06-10 | 2026-07-04 | SDR-2-CON-RW-ZG-2280 | 22d |
| SDR-2-CON-RW-ZG-1180 |  | Embankments to the Road 4 Layer | 21d | 2026-07-05 | 2026-07-28 | SDR-2-CON-RW-ZG-2290 | 22d |

| ID | WBS | Task | Duration | Start | Finish | Predecessors | Total float |
| --- | --- | --- | --- | --- | --- | --- | --- |
|  | 11 | **Subgrade** |  | 2026-07-29 | 2026-08-22 |  |  |
| SDR-2-CON-RW-ZG-1190 |  | Subgrade layer works | 21d | 2026-07-29 | 2026-08-22 | SDR-2-CON-RW-ZG-1180 | 22d |
|  | 9 | **Earth Works Plot** |  | 2026-08-23 | 2026-11-19 |  |  |
| SDR-2-CON-RW-ZG-1200 |  | Plot Excavation for cuttings (all types of soil) | 21d | 2026-08-23 | 2026-09-15 | SDR-2-CON-RW-ZG-1170, SDR-2-CON-RW-ZG-1190 | 35d |
| SDR-2-CON-RW-ZG-2300 |  | Embankments to the Plot 1 Layer | 21d | 2026-10-03 | 2026-10-26 | SDR-2-CON-RW-ZG-1050 FS+9d, SDR-2-CON-RW-ZG-1200 FS+4d | 26d |
| SDR-2-CON-RW-ZG-1210 |  | Embankments to the Plot 2 Layer | 21d | 2026-10-27 | 2026-11-19 | SDR-2-CON-RW-ZG-2300 | 26d |
|  | 2 | **Base Course** |  | 2026-08-23 | 2026-09-15 |  |  |
| SDR-2-CON-RW-ZG-1220 |  | Aggregate base course layer | 21d | 2026-08-23 | 2026-09-15 | SDR-2-CON-RW-ZG-1190 | 22d |
|  | 8 | **Demolition Work** |  | 2026-09-16 | 2026-10-11 |  |  |
| SDR-2-CON-RW-ZG-1230 |  | Removal of curbstone | 8d | 2026-09-16 | 2026-09-26 | SDR-2-CON-RW-ZG-1220 | 22d |
| SDR-2-CON-RW-ZG-1240 |  | Milling of wearing course | 13d | 2026-09-27 | 2026-10-11 | SDR-2-CON-RW-ZG-1230 | 22d |
|  | 3 | **Asphalt Works** |  | 2026-10-12 | 2026-11-29 |  |  |
| SDR-2-CON-RW-ZG-1250 |  | Asphalt works 1st Layer with MC-01 | 21d | 2026-10-12 | 2026-11-04 | SDR-2-CON-RW-ZG-1220, SDR-2-CON-RW-ZG-1240 | 22d |
| SDR-2-CON-RW-ZG-1260 |  | Asphalt works 2nd layer with RC-02 | 21d | 2026-11-05 | 2026-11-29 | SDR-2-CON-RW-ZG-2550, SDR-2-CON-RW-ZG-1250 | 22d |
|  | 4 | **Kerbstone Installation** |  | 2026-08-23 | 2026-12-22 |  |  |
| SDR-2-CON-RW-ZG-2560 |  | Kerbstone Installation "all Types" Part 1 | 18d | 2026-08-23 | 2026-09-12 | SDR-2-CON-RW-ZG-1190 | 40d |
| SDR-2-CON-RW-ZG-1270 |  | Kerbstone Installation "all Types" Part 2 | 20d | 2026-11-30 | 2026-12-22 | SDR-2-CON-RW-ZG-1260 | 22d |
|  | 5 | **Interlock Installation** |  | 2026-12-23 | 2027-01-16 |  |  |
| SDR-2-CON-RW-ZG-1280 |  | Interlock Installation | 21d | 2026-12-23 | 2027-01-16 | SDR-2-CON-RW-ZG-1270 | 22d |
|  | 6 | **Road Marking** |  | 2027-01-17 | 2027-02-17 |  |  |
| SDR-2-CON-RW-ZG-1290 |  | Retroreflective Thermoplastic White Traffic lines | 14d | 2027-01-17 | 2027-02-01 | SDR-2-CON-RW-ZG-1280 | 22d |
| SDR-2-CON-RW-ZG-1300 |  | Retroreflective Thermoplastic Yellow, Traffic lines | 14d | 2027-02-02 | 2027-02-17 | SDR-2-CON-RW-ZG-1290 | 22d |
|  | 7 | **Traffic Signage** |  | 2027-02-18 | 2027-03-18 |  |  |
| SDR-2-CON-RW-ZG-1310 |  | Single post-Traffic signs Installation | 20d | 2027-02-18 | 2027-03-18 | SDR-2-CON-RW-ZG-1300, SDR-2-CON-RW-ZG-1210 | 22d |
|  | 8 | **ROAD WORKS IN ( PH2-G-MCE0 )** |  | 2026-04-01 | 2027-03-20 |  |  |
|  | 1 | **Earth Works Road** |  | 2026-04-01 | 2026-04-25 |  |  |
| SDR-2-CON-RW-ZG-1470 |  | Roadway Excavation and cuttings | 21d | 2026-04-01 | 2026-04-25 | SDR-2-CON-RW-ZG-1320 SS+3d | 19d |
|  | 10 | **Backfilling Works** |  | 2026-04-26 | 2026-08-17 |  |  |
| SDR-2-CON-RW-ZG-2350 |  | Embankments to the Road 1 Layer | 21d | 2026-04-26 | 2026-05-19 | SDR-2-CON-RW-ZG-1470 | 33d |
| SDR-2-CON-RW-ZG-2360 |  | Embankments to the Road 2 Layer | 21d | 2026-05-20 | 2026-06-17 | SDR-2-CON-RW-ZG-2350 | 33d |
| SDR-2-CON-RW-ZG-2370 |  | Embankments to the Road 3 Layer | 21d | 2026-06-18 | 2026-07-12 | SDR-2-CON-RW-ZG-2360 | 33d |
| SDR-2-CON-RW-ZG-1480 |  | Embankments to the Road 4 Layer | 21d | 2026-07-25 | 2026-08-17 | SDR-2-PRO-DEL-E-1010, SDR-2-CON-RW-ZG-2370 FS+6d | 29d |
|  | 11 | **Subgrade** |  | 2026-08-25 | 2026-09-17 |  |  |
| SDR-2-CON-RW-ZG-1490 |  | Subgrade layer works | 21d | 2026-08-25 | 2026-09-17 | SDR-2-CON-RW-ZG-1480 FS+6d | 29d |
|  | 9 | **Earth Works Plot** |  | 2026-09-19 | 2026-12-03 |  |  |
| SDR-2-CON-RW-ZG-1500 |  | Plot Excavation for cuttings (all types of soil) | 21d | 2026-09-19 | 2026-10-13 | SDR-2-CON-RW-ZG-1470, SDR-2-CON-RW-ZG-1490 | 29d |
| SDR-2-CON-RW-ZG-2380 |  | Embankments to the Plot 1 Layer | 21d | 2026-10-14 | 2026-11-07 | SDR-2-CON-RW-ZG-1500 | 29d |
| SDR-2-CON-RW-ZG-1510 |  | Embankments to the Plot 2 Layer | 21d | 2026-11-10 | 2026-12-03 | SDR-2-CON-RW-ZG-2380 FS+2d | 29d |
|  | 2 | **Base Course** |  | 2026-09-19 | 2026-10-10 |  |  |
| SDR-2-CON-RW-ZG-1520 |  | Aggregate base course layer | 18d | 2026-09-19 | 2026-10-10 | SDR-2-CON-RW-ZG-1490 | 31d |
|  | 8 | **Demolition Work** |  | 2026-10-11 | 2026-10-28 |  |  |
| SDR-2-CON-RW-ZG-1530 |  | Removal of curbstone | 4d | 2026-10-11 | 2026-10-14 | SDR-2-CON-RW-ZG-1520 | 31d |
| SDR-2-CON-RW-ZG-1540 |  | Milling of wearing course | 5d | 2026-10-24 | 2026-10-28 | SDR-2-CON-RW-ZG-2570, SDR-2-CON-RW-ZG-1530 | 24d |
|  | 3 | **Asphalt Works** |  | 2026-10-29 | 2026-11-29 |  |  |
| SDR-2-CON-RW-ZG-1550 |  | Asphalt works 1st Layer with MC-01 | 12d | 2026-10-29 | 2026-11-11 | SDR-2-CON-RW-ZG-1520, SDR-2-CON-RW-ZG-1540 | 24d |
| SDR-2-CON-RW-ZG-1560 |  | Asphalt works 2nd layer with RC-02 | 15d | 2026-11-12 | 2026-11-29 | SDR-2-CON-RW-ZG-1550 | 24d |
|  | 4 | **Kerbstone Installation** |  | 2026-09-19 | 2026-12-23 |  |  |
| SDR-2-CON-RW-ZG-2580 |  | Kerbstone Installation "all Types" Part 1 | 18d | 2026-09-19 | 2026-10-10 | SDR-2-CON-RW-ZG-1490 | 31d |
| SDR-2-CON-RW-ZG-1570 |  | Kerbstone Installation "all Types" Part 2 | 21d | 2026-11-30 | 2026-12-23 | SDR-2-CON-RW-ZG-1560 | 24d |
|  | 5 | **Interlock Installation** |  | 2026-12-24 | 2027-01-17 |  |  |
| SDR-2-CON-RW-ZG-1580 |  | Interlock Installation | 21d | 2026-12-24 | 2027-01-17 | SDR-2-CON-RW-ZG-1570 | 24d |
|  | 6 | **Road Marking** |  | 2027-01-18 | 2027-02-18 |  |  |
| SDR-2-CON-RW-ZG-1590 |  | Retroreflective Thermoplastic White Traffic lines | 14d | 2027-01-18 | 2027-02-02 | SDR-2-CON-RW-ZG-1580 | 24d |
| SDR-2-CON-RW-ZG-1600 |  | Retroreflective Thermoplastic Yellow, Traffic lines | 14d | 2027-02-03 | 2027-02-18 | SDR-2-CON-RW-ZG-1590 | 24d |
|  | 7 | **Traffic Signage** |  | 2027-02-20 | 2027-03-20 |  |  |
| SDR-2-CON-RW-ZG-1610 |  | Single post-Traffic signs Installation | 20d | 2027-02-20 | 2027-03-20 | SDR-2-CON-RW-ZG-1600, SDR-2-CON-RW-ZG-1510 | 24d |
|  | 4 | **ROAD WORKS IN ( PH2-G-MCD0 )** |  | 2026-04-05 | 2027-03-21 |  |  |
|  | 1 | **Earth Works Road** |  | 2026-04-05 | 2026-04-27 |  |  |
| SDR-2-CON-RW-ZG-1620 |  | Roadway Excavation and cuttings | 20d | 2026-04-05 | 2026-04-27 | SDR-2-CON-RW-ZG-1470 SS+3d | 19d |
|  | 10 | **Backfilling Works** |  | 2026-05-02 | 2026-08-18 |  |  |
| SDR-2-CON-RW-ZG-2390 |  | Embankments to the Road 1 Layer | 21d | 2026-05-02 | 2026-05-25 | SDR-2-CON-RW-ZG-1620 FS+3d | 19d |
| SDR-2-CON-RW-ZG-2400 |  | Embankments to the Road 2 Layer | 21d | 2026-05-26 | 2026-06-23 | SDR-2-CON-RW-ZG-2390 | 19d |
| SDR-2-CON-RW-ZG-2410 |  | Embankments to the Road 3 Layer | 21d | 2026-06-24 | 2026-07-18 | SDR-2-CON-RW-ZG-2400 | 19d |
| SDR-2-CON-RW-ZG-1630 |  | Embankments to the Road 4 Layer | 21d | 2026-07-26 | 2026-08-18 | SDR-2-CON-RW-ZG-2410 FS+6d | 19d |
|  | 11 | **Subgrade** |  | 2026-08-24 | 2026-09-16 |  |  |
| SDR-2-CON-RW-ZG-1640 |  | Subgrade layer works | 21d | 2026-08-24 | 2026-09-16 | SDR-2-CON-RW-ZG-1630 FS+4d | 19d |
|  | 9 | **Earth Works Plot** |  | 2026-09-17 | 2026-12-03 |  |  |
| SDR-2-CON-RW-ZG-1650 |  | Plot Excavation for cuttings (all types of soil) | 21d | 2026-09-17 | 2026-10-12 | SDR-2-CON-RW-ZG-1620, SDR-2-CON-RW-ZG-1640 | 29d |
| SDR-2-CON-RW-ZG-2420 |  | Embankments to the Plot 1 Layer | 21d | 2026-10-13 | 2026-11-05 | SDR-2-CON-RW-ZG-2580, SDR-2-CON-RW-ZG-1650 | 29d |
| SDR-2-CON-RW-ZG-1660 |  | Embankments to the Plot 2 Layer | 21d | 2026-11-10 | 2026-12-03 | SDR-2-CON-RW-ZG-2380, SDR-2-CON-RW-ZG-2420 FS+3d | 29d |

| ID | WBS | Task | Duration | Start | Finish | Predecessors | Total float |
| --- | --- | --- | --- | --- | --- | --- | --- |
|  | 2 | **Base Course** |  | 2026-09-17 | 2026-10-06 |  |  |
| SDR-2-CON-RW-ZG-1670 |  | Aggregate base course layer | 16d | 2026-09-17 | 2026-10-06 | SDR-2-CON-RW-ZG-1640 | 19d |
|  | 8 | **Demolition Work** |  | 2026-10-07 | 2026-10-17 |  |  |
| SDR-2-CON-RW-ZG-1680 |  | Removal of curbstone | 4d | 2026-10-07 | 2026-10-11 | SDR-2-CON-RW-ZG-1670 | 19d |
| SDR-2-CON-RW-ZG-1690 |  | Milling of wearing course | 5d | 2026-10-12 | 2026-10-17 | SDR-2-CON-RW-ZG-1680 | 19d |
|  | 3 | **Asphalt Works** |  | 2026-10-18 | 2026-12-01 |  |  |
| SDR-2-CON-RW-ZG-1700 |  | Asphalt works 1st Layer with MC-01 | 18d | 2026-10-18 | 2026-11-07 | SDR-2-CON-RW-ZG-1670, SDR-2-CON-RW-ZG-1690 | 19d |
| SDR-2-CON-RW-ZG-1710 |  | Asphalt works 2nd layer with RC-02 | 21d | 2026-11-08 | 2026-12-01 | SDR-2-CON-RW-ZG-1700 | 19d |
|  | 4 | **Kerbstone Installation** |  | 2026-09-17 | 2026-12-26 |  |  |
| SDR-2-CON-RW-ZG-2590 |  | Kerbstone Installation "all Types" Part 1 | 18d | 2026-09-17 | 2026-10-08 | SDR-2-CON-RW-ZG-1640 | 25d |
| SDR-2-CON-RW-ZG-1720 |  | Kerbstone Installation "all Types" Part 2 | 21d | 2026-12-02 | 2026-12-26 | SDR-2-CON-RW-ZG-1710 | 19d |
|  | 5 | **Interlock Installation** |  | 2026-12-27 | 2027-01-18 |  |  |
| SDR-2-CON-RW-ZG-1730 |  | Interlock Installation | 20d | 2026-12-27 | 2027-01-18 | SDR-2-CON-RW-ZG-1720 | 19d |
|  | 6 | **Road Marking** |  | 2027-01-19 | 2027-02-20 |  |  |
| SDR-2-CON-RW-ZG-1740 |  | Retroreflective Thermoplastic White Traffic lines | 14d | 2027-01-19 | 2027-02-03 | SDR-2-CON-RW-ZG-1730 | 19d |
| SDR-2-CON-RW-ZG-1750 |  | Retroreflective Thermoplastic Yellow, Traffic lines | 14d | 2027-02-04 | 2027-02-20 | SDR-2-CON-RW-ZG-1740, SDR-2-CON-RW-ZG-1660 SS | 19d |
|  | 7 | **Traffic Signage** |  | 2027-02-21 | 2027-03-21 |  |  |
| SDR-2-CON-RW-ZG-1760 |  | Single post-Traffic signs Installation | 20d | 2027-02-21 | 2027-03-21 | SDR-2-CON-RW-ZG-1750, SDR-2-CON-RW-ZG-1660 | 19d |
|  | 2 | **ROAD WORKS IN ( PH2-G-MCF0 )** |  | 2026-04-08 | 2027-03-23 |  |  |
|  | 1 | **Earth Works Road** |  | 2026-04-08 | 2026-05-02 |  |  |
| SDR-2-CON-RW-ZG-1770 |  | Roadway Excavation and cuttings | 21d | 2026-04-08 | 2026-05-02 | SDR-2-CON-RW-ZG-1620 SS+3d | 23d |
|  | 10 | **Backfilling Works** |  | 2026-05-06 | 2026-08-23 |  |  |
| SDR-2-CON-RW-ZG-2430 |  | Embankments to the Road 1 Layer | 21d | 2026-05-06 | 2026-06-03 | SDR-2-CON-RW-ZG-1770 FS+3d | 23d |
| SDR-2-CON-RW-ZG-2440 |  | Embankments to the Road 2 Layer | 21d | 2026-06-04 | 2026-06-28 | SDR-2-CON-RW-ZG-2430 | 23d |
| SDR-2-CON-RW-ZG-2450 |  | Embankments to the Road 3 Layer | 21d | 2026-06-29 | 2026-07-22 | SDR-2-CON-RW-ZG-2440 | 23d |
| SDR-2-CON-RW-ZG-1780 |  | Embankments to the Road 4 Layer | 21d | 2026-07-30 | 2026-08-23 | SDR-2-CON-RW-ZG-2450 FS+6d | 23d |
|  | 11 | **Subgrade** |  | 2026-08-24 | 2026-09-07 |  |  |
| SDR-2-CON-RW-ZG-1790 |  | Subgrade layer works | 13d | 2026-08-24 | 2026-09-07 | SDR-2-CON-RW-ZG-1780 | 23d |
|  | 9 | **Earth Works Plot** |  | 2026-09-08 | 2026-11-21 |  |  |
| SDR-2-CON-RW-ZG-1800 |  | Plot Excavation for cuttings (all types of soil) | 21d | 2026-09-08 | 2026-10-03 | SDR-2-CON-RW-ZG-1770, SDR-2-CON-RW-ZG-1790 | 33d |
| SDR-2-CON-RW-ZG-2460 |  | Embankments to the Plot1 Layer | 21d | 2026-10-04 | 2026-10-27 | SDR-2-CON-RW-ZG-1800 | 33d |
| SDR-2-CON-RW-ZG-1810 |  | Embankments to the Plot 2 Layer | 21d | 2026-10-28 | 2026-11-21 | SDR-2-CON-RW-ZG-2460 | 33d |
|  | 2 | **Base Course** |  | 2026-09-08 | 2026-10-03 |  |  |
| SDR-2-CON-RW-ZG-1820 |  | Aggregate base course layer | 21d | 2026-09-08 | 2026-10-03 | SDR-2-CON-RW-ZG-1790 | 23d |
|  | 8 | **Demolition Work** |  | 2026-10-04 | 2026-10-19 |  |  |
| SDR-2-CON-RW-ZG-1830 |  | Removal of curbstone | 7d | 2026-10-04 | 2026-10-11 | SDR-2-CON-RW-ZG-1820 | 23d |
| SDR-2-CON-RW-ZG-1840 |  | Milling of wearing course | 7d | 2026-10-12 | 2026-10-19 | SDR-2-CON-RW-ZG-2590, SDR-2-CON-RW-ZG-1830 | 23d |
|  | 3 | **Asphalt Works** |  | 2026-10-20 | 2026-12-02 |  |  |
| SDR-2-CON-RW-ZG-1850 |  | Asphalt works 1st Layer with MC-01 | 17d | 2026-10-20 | 2026-11-08 | SDR-2-CON-RW-ZG-1820, SDR-2-CON-RW-ZG-1840 | 23d |
| SDR-2-CON-RW-ZG-1860 |  | Asphalt works 2nd layer with RC-02 | 21d | 2026-11-09 | 2026-12-02 | SDR-2-CON-RW-ZG-1650, SDR-2-CON-RW-ZG-1850 | 23d |
|  | 4 | **Kerbstone Installation** |  | 2026-09-08 | 2026-12-27 |  |  |
| SDR-2-CON-RW-ZG-2600 |  | Kerbstone Installation "all Types" Part 1 | 18d | 2026-09-08 | 2026-09-29 | SDR-2-CON-RW-ZG-1790 | 25d |
| SDR-2-CON-RW-ZG-1870 |  | Kerbstone Installation "all Types" Part 2 | 21d | 2026-12-03 | 2026-12-27 | SDR-2-CON-RW-ZG-1860 | 23d |
|  | 5 | **Interlock Installation** |  | 2026-12-28 | 2027-01-20 |  |  |
| SDR-2-CON-RW-ZG-1880 |  | Interlock Installation | 21d | 2026-12-28 | 2027-01-20 | SDR-2-CON-RW-ZG-1870 | 23d |
|  | 6 | **Road Marking** |  | 2027-01-21 | 2027-02-23 |  |  |
| SDR-2-CON-RW-ZG-1890 |  | Retroreflective Thermoplastic White Traffic lines | 14d | 2027-01-21 | 2027-02-06 | SDR-2-CON-RW-ZG-1880 | 23d |
| SDR-2-CON-RW-ZG-1900 |  | Retroreflective Thermoplastic Yellow, Traffic lines | 14d | 2027-02-07 | 2027-02-23 | SDR-2-CON-RW-ZG-1890, SDR-2-CON-RW-ZG-1810 SS | 23d |
|  | 7 | **Traffic Signage** |  | 2027-02-24 | 2027-03-23 |  |  |
| SDR-2-CON-RW-ZG-1910 |  | Single post-Traffic signs Installation | 20d | 2027-02-24 | 2027-03-23 | SDR-2-CON-RW-ZG-1900, SDR-2-CON-RW-ZG-1810 | 23d |
|  | 3 | **ROAD WORKS IN ( PH2-G-MCG0 )** |  | 2026-04-08 | 2027-03-20 |  |  |
|  | 1 | **Earth Works Road** |  | 2026-04-08 | 2026-05-02 |  |  |
| SDR-2-CON-RW-ZG-1920 |  | Roadway Excavation and cuttings | 21d | 2026-04-08 | 2026-05-02 | SDR-2-CON-RW-ZG-1770 SS | 26d |
|  | 10 | **Backfilling Works** |  | 2026-05-03 | 2026-08-16 |  |  |
| SDR-2-CON-RW-ZG-2470 |  | Embankments to the Road 1 Layer | 21d | 2026-05-03 | 2026-05-26 | SDR-2-CON-RW-ZG-1920 | 26d |
| SDR-2-CON-RW-ZG-2480 |  | Embankments to the Road 2 Layer | 21d | 2026-06-01 | 2026-06-24 | SDR-2-CON-RW-ZG-2470 | 26d |
| SDR-2-CON-RW-ZG-2490 |  | Embankments to the Road 3 Layer | 21d | 2026-06-25 | 2026-07-19 | SDR-2-CON-RW-ZG-2480 | 26d |
| SDR-2-CON-RW-ZG-1930 |  | Embankments to the Road 4 Layer | 21d | 2026-07-23 | 2026-08-16 | SDR-2-CON-RW-ZG-2490 FS+3d | 26d |
|  | 11 | **Subgrade** |  | 2026-08-20 | 2026-09-13 |  |  |
| SDR-2-CON-RW-ZG-1940 |  | Subgrade layer works | 21d | 2026-08-20 | 2026-09-13 | SDR-2-CON-RW-ZG-1930 FS+3d | 26d |
|  | 9 | **Earth Works Plot** |  | 2026-09-14 | 2026-11-30 |  |  |
| SDR-2-CON-RW-ZG-1950 |  | Plot Excavation for cuttings (all types of soil) | 21d | 2026-09-14 | 2026-10-08 | SDR-2-CON-RW-ZG-1920, SDR-2-CON-RW-ZG-1940 | 36d |
| SDR-2-CON-RW-ZG-2500 |  | Embankments to the Plot 1 Layer | 21d | 2026-10-13 | 2026-11-05 | SDR-2-CON-RW-ZG-1650, SDR-2-CON-RW-ZG-1950 | 33d |
| SDR-2-CON-RW-ZG-1960 |  | Embankments to the Plot 2 Layer | 21d | 2026-11-07 | 2026-11-30 | SDR-2-CON-RW-ZG-2500 FF, SDR-2-CON-RW-ZG-2500 | 37d |
|  | 2 | **Base Course** |  | 2026-09-14 | 2026-10-08 |  |  |
| SDR-2-CON-RW-ZG-1970 |  | Aggregate base course layer | 21d | 2026-09-14 | 2026-10-08 | SDR-2-CON-RW-ZG-1940 | 26d |
|  | 8 | **Demolition Work** |  | 2026-10-10 | 2026-10-27 |  |  |
| SDR-2-CON-RW-ZG-1980 |  | Removal of curbstone | 8d | 2026-10-10 | 2026-10-18 | SDR-2-CON-RW-ZG-1970, SDR-2-CON-RW-ZG-1950 SS | 26d |
| SDR-2-CON-RW-ZG-1990 |  | Milling of wearing course | 8d | 2026-10-19 | 2026-10-27 | SDR-2-CON-RW-ZG-2610, SDR-2-CON-RW-ZG-2600 FS+6d, SDR-2-CON-RW-ZG-1980 | 26d |
|  | 3 | **Asphalt Works** |  | 2026-10-28 | 2026-11-29 |  |  |

| ID | WBS | Task | Duration | Start | Finish | Predecessors | Total float |
| --- | --- | --- | --- | --- | --- | --- | --- |
| SDR-2-CON-RW-ZG-2000 |  | Asphalt works 1st Layer with MC-01 | 12d | 2026-10-28 | 2026-11-10 | SDR-2-CON-RW-ZG-1970, SDR-2-CON-RW-ZG-1990 | 26d |
| SDR-2-CON-RW-ZG-2010 |  | Asphalt works 2nd layer with RC-02 | 16d | 2026-11-11 | 2026-11-29 | SDR-2-CON-RW-ZG-2460, SDR-2-CON-RW-ZG-2000 | 26d |
|  | 4 | **Kerbstone Installation** |  | 2026-09-14 | 2026-12-23 |  |  |
| SDR-2-CON-RW-ZG-2610 |  | Kerbstone Installation "all Types" Part 1 | 18d | 2026-09-14 | 2026-10-05 | SDR-2-CON-RW-ZG-1940 | 37d |
| SDR-2-CON-RW-ZG-2020 |  | Kerbstone Installation "all Types" Part 2 | 21d | 2026-11-30 | 2026-12-23 | SDR-2-CON-RW-ZG-1810, SDR-2-CON-RW-ZG-2420, SDR-2-CON-RW-ZG-2010 | 26d |
|  | 5 | **Interlock Installation** |  | 2026-12-24 | 2027-01-17 |  |  |
| SDR-2-CON-RW-ZG-2030 |  | Interlock Installation | 21d | 2026-12-24 | 2027-01-17 | SDR-2-CON-RW-ZG-2020, SDR-2-CON-RW-ZG-1960 SS | 26d |
|  | 6 | **Road Marking** |  | 2027-01-18 | 2027-02-18 |  |  |
| SDR-2-CON-RW-ZG-2040 |  | Retroreflective Thermoplastic White Traffic lines | 14d | 2027-01-18 | 2027-02-02 | SDR-2-CON-RW-ZG-2030 | 26d |
| SDR-2-CON-RW-ZG-2050 |  | Retroreflective Thermoplastic Yellow, Traffic lines | 14d | 2027-02-03 | 2027-02-18 | SDR-2-CON-RW-ZG-2040 | 26d |
|  | 7 | **Traffic Signage** |  | 2027-02-20 | 2027-03-20 |  |  |
| SDR-2-CON-RW-ZG-2060 |  | Single post-Traffic signs Installation | 20d | 2027-02-20 | 2027-03-20 | SDR-2-CON-RW-ZG-2050, SDR-2-CON-RW-ZG-1960 | 26d |
|  | 7 | **ROAD WORKS IN ( PH2-G-MCZ0 )** |  | 2026-04-08 | 2027-03-20 |  |  |
|  | 1 | **Earth Works Road** |  | 2026-04-08 | 2026-05-02 |  |  |
| SDR-2-CON-RW-ZG-2070 |  | Roadway Excavation and cuttings | 21d | 2026-04-08 | 2026-05-02 | SDR-2-CON-RW-ZG-1920 SS | 28d |
|  | 10 | **Backfilling Works** |  | 2026-05-03 | 2026-08-12 |  |  |
| SDR-2-CON-RW-ZG-2510 |  | Embankments to the Road 1 Layer | 21d | 2026-05-03 | 2026-05-26 | SDR-2-CON-RW-ZG-2070 | 28d |
| SDR-2-CON-RW-ZG-2520 |  | Embankments to the Road 2 Layer | 21d | 2026-06-01 | 2026-06-24 | SDR-2-CON-RW-ZG-2510 | 28d |
| SDR-2-CON-RW-ZG-2530 |  | Embankments to the Road 3 Layer | 21d | 2026-06-25 | 2026-07-19 | SDR-2-CON-RW-ZG-2520 | 28d |
| SDR-2-CON-RW-ZG-2080 |  | Embankments to the Road 4 Layer | 21d | 2026-07-20 | 2026-08-12 | SDR-2-CON-RW-ZG-2530 | 28d |
|  | 11 | **Subgrade** |  | 2026-08-13 | 2026-09-06 |  |  |
| SDR-2-CON-RW-ZG-2090 |  | Subgrade layer works | 21d | 2026-08-13 | 2026-09-06 | SDR-2-CON-RW-ZG-2080 | 28d |
|  | 9 | **Earth Works Plot** |  | 2026-09-07 | 2026-11-19 |  |  |
| SDR-2-CON-RW-ZG-2100 |  | Plot Excavation for cuttings (all types of soil) | 21d | 2026-09-07 | 2026-10-01 | SDR-2-CON-RW-ZG-2070, SDR-2-CON-RW-ZG-2090 | 28d |
| SDR-2-CON-RW-ZG-2540 |  | Embankments to the Plot 1 Layer | 21d | 2026-10-03 | 2026-10-26 | SDR-2-CON-RW-ZG-2070, SDR-2-CON-RW-ZG-2100 | 28d |
| SDR-2-CON-RW-ZG-2110 |  | Embankments to the Plot 2 Layer | 21d | 2026-10-27 | 2026-11-19 | SDR-2-CON-RW-ZG-2540 | 28d |
|  | 2 | **Base Course** |  | 2026-09-07 | 2026-10-01 |  |  |
| SDR-2-CON-RW-ZG-2120 |  | Aggregate base course layer | 21d | 2026-09-07 | 2026-10-01 | SDR-2-CON-RW-ZG-2090 | 36d |
|  | 8 | **Demolition Work** |  | 2026-10-14 | 2026-10-31 |  |  |
| SDR-2-CON-RW-ZG-2130 |  | Removal of curbstone | 5d | 2026-10-14 | 2026-10-19 | SDR-2-PRO-DEL-E-1190, SDR-2-CON-RW-ZG-2120 | 26d |
| SDR-2-CON-RW-ZG-2140 |  | Milling of wearing course | 10d | 2026-10-20 | 2026-10-31 | SDR-2-CON-RW-ZG-2130, SDR-2-CON-RW-ZG-2100 | 26d |
|  | 3 | **Asphalt Works** |  | 2026-11-01 | 2026-11-29 |  |  |
| SDR-2-CON-RW-ZG-2150 |  | Asphalt works 1st Layer with MC-01 | 12d | 2026-11-01 | 2026-11-14 | SDR-2-CON-RW-ZG-2120, SDR-2-CON-RW-ZG-2140 | 26d |
| SDR-2-CON-RW-ZG-2160 |  | Asphalt works 2nd layer with RC-02 | 13d | 2026-11-15 | 2026-11-29 | SDR-2-CON-RW-ZG-2620, SDR-2-CON-RW-ZG-2150 | 26d |
|  | 4 | **Kerbstone Installation** |  | 2026-10-05 | 2026-12-23 |  |  |
| SDR-2-CON-RW-ZG-2620 |  | Kerbstone Installation "all Types" Part 1 | 18d | 2026-10-05 | 2026-10-25 | SDR-2-CON-RW-ZG-2120, SDR-2-PRO-DES-C-1020 | 43d |
| SDR-2-CON-RW-ZG-2170 |  | Kerbstone Installation "all Types" Part 2 | 21d | 2026-11-30 | 2026-12-23 | SDR-2-CON-RW-ZG-2160 | 26d |
|  | 5 | **Interlock Installation** |  | 2026-12-24 | 2027-01-17 |  |  |
| SDR-2-CON-RW-ZG-2180 |  | Interlock Installation | 21d | 2026-12-24 | 2027-01-17 | SDR-2-CON-RW-ZG-2170 | 26d |
|  | 6 | **Road Marking** |  | 2027-01-18 | 2027-02-18 |  |  |
| SDR-2-CON-RW-ZG-2190 |  | Retroreflective Thermoplastic White Traffic lines | 14d | 2027-01-18 | 2027-02-02 | SDR-2-CON-RW-ZG-2180 | 26d |
| SDR-2-CON-RW-ZG-2200 |  | Retroreflective Thermoplastic Yellow, Traffic lines | 14d | 2027-02-03 | 2027-02-18 | SDR-2-CON-RW-ZG-2190, SDR-2-CON-RW-ZG-2110 SS | 26d |
|  | 7 | **Traffic Signage** |  | 2027-02-20 | 2027-03-20 |  |  |
| SDR-2-CON-RW-ZG-2210 |  | Single post-Traffic signs Installation | 20d | 2027-02-20 | 2027-03-20 | SDR-2-CON-RW-ZG-2200, SDR-2-CON-RW-ZG-2110 | 26d |
|  | ST | **Storm Water Drainage Network** |  | 2026-03-30 | 2027-05-04 |  |  |
|  | ZA | **ZONE A** |  | 2026-03-30 | 2027-04-24 |  |  |
|  | 11 | **STORM WATER LINE IN ( PH2-A-MCB0 )** |  | 2026-07-12 | 2027-04-24 |  |  |
|  | 8 | **Pipes Works** |  | 2026-07-12 | 2027-01-07 |  |  |
|  | 1 | **Excavation** |  | 2026-07-12 | 2026-09-27 |  |  |
| SDR-2-CON-ST-ZA-6900 |  | Excavation for GRP Pipes Section 1 | 21d | 2026-07-12 | 2026-08-04 | SDR-2-CON-RW-ZA-2870, SDR-2-ENG-APP-M-1130, SDR-2-PRO-MSS-C-1080 FS+2d, SDR-2-PRO-DEL-M-1040, SDR-2-PRO-DES-C-1030, SDR-2-PRO-ST-M-1000 | 4d |
| SDR-2-CON-ST-ZA-6360 |  | Excavation for GRP Pipes Section 2 | 21d | 2026-08-05 | 2026-08-29 | SDR-2-CON-ST-ZA-6900 | 5d |
| SDR-2-CON-ST-ZA-1000 |  | Excavation for GRP Pipes Section 3 | 21d | 2026-09-02 | 2026-09-27 | SDR-2-PRO-DEL-M-1020, SDR-2-PRO-DES-C-1070, SDR-2-CON-ST-ZA-6360 | 7d |
|  | 7 | **bedding Works** |  | 2026-10-03 | 2026-10-26 |  |  |
| SDR-2-CON-ST-ZA-3450 |  | Sand bedding for GRP Pipes | 21d | 2026-10-03 | 2026-10-26 | SDR-2-CON-ST-ZA-1000 FS+4d | 7d |
|  | 2 | **Pipes Laying** |  | 2026-10-27 | 2026-11-19 |  |  |
| SDR-2-CON-ST-ZA-1090 |  | Install ST GRP Pipes | 21d | 2026-10-27 | 2026-11-19 | SDR-2-PRO-DES-C-1020, SDR-2-CON-ST-ZA-3450 | 7d |
|  | 6 | **Testing** |  | 2026-11-21 | 2026-12-14 |  |  |
| SDR-2-CON-ST-ZA-3440 |  | Testing ST GRP Pipes | 21d | 2026-11-21 | 2026-12-14 | SDR-2-PRO-DEL-E-1200, SDR-2-CON-ST-ZA-1090 | 7d |
|  | 3 | **Backfilling** |  | 2026-12-15 | 2027-01-07 |  |  |
| SDR-2-CON-ST-ZA-1140 |  | Backfilling ST GRP Pipes | 21d | 2026-12-15 | 2027-01-07 | SDR-2-CON-ST-ZA-3440 | 7d |
|  | 4 | **Manholes** |  | 2026-07-22 | 2027-01-16 |  |  |
|  | 1 | **Excavation** |  | 2026-07-22 | 2026-10-04 |  |  |
| SDR-2-CON-ST-ZA-6910 |  | Excavation Manholes Section 1 | 21d | 2026-07-22 | 2026-08-15 | SDR-2-CON-ST-ZA-6900 SS, SDR-2-PRO-DEL-M-1030, SDR-2-PRO-ST-M-1050 | 0d |
| SDR-2-CON-ST-ZA-6370 |  | Excavation Manholes Section 2 | 21d | 2026-08-16 | 2026-09-08 | SDR-2-CON-ST-ZA-6910 | 0d |
| SDR-2-CON-ST-ZA-1210 |  | Excavation Manholes Section 3 | 21d | 2026-09-09 | 2026-10-04 | SDR-2-PRO-DEL-E-1090, SDR-2-CON-ST-ZA-6370 | 0d |
|  | 2 | **bedding Works** |  | 2026-10-05 | 2026-10-28 |  |  |
| SDR-2-CON-ST-ZA-3520 |  | Sand bedding for Manholes | 21d | 2026-10-05 | 2026-10-28 | SDR-2-PRO-DES-C-1060, SDR-2-CON-ST-ZA-1210, SDR-2-PRO-DEL-E-1050 | 0d |
|  | 3 | **Install Manholes** |  | 2026-10-29 | 2026-11-22 |  |  |
| SDR-2-CON-ST-ZA-3600 |  | Manholes Installation | 21d | 2026-10-29 | 2026-11-22 | SDR-2-CON-RW-ZG-2600, SDR-2-CON-ST-ZA-3520, SDR-2-PRO-DEL-M-1030, SDR-2-PRO-DEL-M-1020, SDR-2-PRO-ST-E-1070 | 0d |
|  | 4 | **Testing** |  | 2026-11-29 | 2026-12-22 |  |  |

| ID | WBS | Task | Duration | Start | Finish | Predecessors | Total float |
| --- | --- | --- | --- | --- | --- | --- | --- |
| SDR-2-CON-ST-ZA-3680 |  | Testing for Manholes | 21d | 2026-11-29 | 2026-12-22 | SDR-2-CON-ST-ZA-3600 FS+5d | 0d |
|  | 5 | **Backfilling** |  | 2026-12-23 | 2027-01-16 |  |  |
| SDR-2-CON-ST-ZA-3760 |  | Backfilling for Manholes | 21d | 2026-12-23 | 2027-01-16 | SDR-2-CON-ST-ZA-3680 | 0d |
|  | 5 | **Catch basin** |  | 2026-11-23 | 2027-04-24 |  |  |
|  | 1 | **Excavation** |  | 2026-11-23 | 2027-01-10 |  |  |
| SDR-2-CON-ST-ZA-6930 |  | Excavation for Catch basin Section 1 | 21d | 2026-11-23 | 2026-12-16 | SDR-2-CON-ST-ZA-6370, SDR-2-CON-ST-ZA-6910, SDR-2-CON-ST-ZA-3600, SDR-2-CON-ST-ZA-3600 FF, SDR-2-PRO-ST-M-1040 | 11d |
| SDR-2-CON-ST-ZA-1300 |  | Excavation for Catch basin Section 2 | 21d | 2026-12-17 | 2027-01-10 | SDR-2-CON-ST-ZA-6930 | 11d |
|  | 2 | **bedding Works** |  | 2027-01-11 | 2027-02-03 |  |  |
| SDR-2-CON-ST-ZA-3840 |  | Sand Dedding for Catch basin | 21d | 2027-01-11 | 2027-02-03 | SDR-2-CON-ST-ZA-1300 | 11d |
|  | 3 | **Install Catch basin** |  | 2027-02-04 | 2027-03-01 |  |  |
| SDR-2-CON-ST-ZA-3900 |  | Install Catch basin | 21d | 2027-02-04 | 2027-03-01 | SDR-2-CON-RW-ZA-2740, SDR-2-CON-CC-ZG-1660, SDR-2-CON-ST-ZA-3840 | 11d |
|  | 4 | **Testing** |  | 2027-03-02 | 2027-03-30 |  |  |
| SDR-2-CON-ST-ZA-3960 |  | Testing for Catch basin pipe | 21d | 2027-03-02 | 2027-03-30 | SDR-2-CON-ST-ZA-3900, SDR-2-MILS-1100 | 11d |
|  | 5 | **Backfilling** |  | 2027-03-31 | 2027-04-24 |  |  |
| SDR-2-CON-ST-ZA-6940 |  | Backfilling for Catch basin Section 1 | 11d | 2027-03-31 | 2027-04-12 | SDR-2-CON-ST-ZA-3960 | 11d |
| SDR-2-CON-ST-ZA-4020 |  | Backfilling for Catch basin Section 2 | 10d | 2027-04-13 | 2027-04-24 | SDR-2-CON-ST-ZA-6940, SDR-2-CON-RW-ZG-2210 | 11d |
|  | 12 | **STORM WATER LINE IN ( PH2-A-MCD0 )** |  | 2026-07-15 | 2027-04-13 |  |  |
|  | 8 | **Pipes Works** |  | 2026-07-15 | 2027-01-03 |  |  |
|  | 1 | **Excavation** |  | 2026-07-15 | 2026-09-27 |  |  |
| SDR-2-CON-ST-ZA-6950 |  | Excavation for GRP Pipes Section 1 | 21d | 2026-07-15 | 2026-08-08 | SDR-2-CON-ST-ZA-6900 SS+3d, SDR-2-PRO-DEL-E-1090 | 4d |
| SDR-2-CON-ST-ZA-6390 |  | Excavation for GRP Pipes Section 2 | 21d | 2026-08-09 | 2026-09-01 | SDR-2-CON-ST-ZA-6950 | 4d |
| SDR-2-CON-ST-ZA-4030 |  | Excavation for GRP Pipes Section 3 | 21d | 2026-09-02 | 2026-09-27 | SDR-2-CON-ST-ZA-6390 | 4d |
|  | 7 | **bedding Works** |  | 2026-09-28 | 2026-10-21 |  |  |
| SDR-2-CON-ST-ZA-4090 |  | Sand bedding for GRP Pipes | 21d | 2026-09-28 | 2026-10-21 | SDR-2-CON-ST-ZA-4030, SDR-2-CON-ST-ZA-4030 FF | 9d |
|  | 2 | **Pipes Laying** |  | 2026-10-22 | 2026-11-15 |  |  |
| SDR-2-CON-ST-ZA-4040 |  | Install ST GRP Pipes | 21d | 2026-10-22 | 2026-11-15 | SDR-2-CON-ST-ZA-4090 | 9d |
|  | 6 | **Testing** |  | 2026-11-16 | 2026-12-09 |  |  |
| SDR-2-CON-ST-ZA-4080 |  | Testing ST GRP Pipes | 21d | 2026-11-16 | 2026-12-09 | SDR-2-CON-ST-ZA-4040 | 9d |
|  | 3 | **Backfilling** |  | 2026-12-10 | 2027-01-03 |  |  |
| SDR-2-CON-ST-ZA-4050 |  | Backfilling ST GRP Pipes | 21d | 2026-12-10 | 2027-01-03 | SDR-2-CON-RW-ZG-1210, SDR-2-CON-ST-ZA-4080 | 9d |
|  | 4 | **Manholes** |  | 2026-07-15 | 2027-01-03 |  |  |
|  | 1 | **Excavation** |  | 2026-07-15 | 2026-09-27 |  |  |
| SDR-2-CON-ST-ZA-6960 |  | Excavation Manholes Section 1 | 21d | 2026-07-15 | 2026-08-08 | SDR-2-CON-ST-ZA-6950 SS, SDR-2-PRO-DES-C-1060, SDR-2-PRO-DES-C-1090, SDR-2-PRO-DES-C-1080 | 20d |
| SDR-2-CON-ST-ZA-6400 |  | Excavation Manholes Section 2 | 21d | 2026-08-09 | 2026-09-01 | SDR-2-CON-ST-ZA-6960 | 20d |
| SDR-2-CON-ST-ZA-4060 |  | Excavation Manholes Section 3 | 21d | 2026-09-02 | 2026-09-27 | SDR-2-PRO-DES-C-1100, SDR-2-CON-ST-ZA-6400 | 20d |
|  | 2 | **bedding Works** |  | 2026-09-28 | 2026-10-21 |  |  |
| SDR-2-CON-ST-ZA-4100 |  | Sand bedding for Manholes | 21d | 2026-09-28 | 2026-10-21 | SDR-2-CON-ST-ZA-4060 | 20d |
|  | 3 | **Install Manholes** |  | 2026-10-22 | 2026-11-15 |  |  |
| SDR-2-CON-ST-ZA-4110 |  | Manholes Installation | 21d | 2026-10-22 | 2026-11-15 | SDR-2-CON-ST-ZA-4100 | 20d |
|  | 4 | **Testing** |  | 2026-11-16 | 2026-12-09 |  |  |
| SDR-2-CON-ST-ZA-4120 |  | Testing for Manholes | 21d | 2026-11-16 | 2026-12-09 | SDR-2-CON-ST-ZA-4110 | 25d |
|  | 5 | **Backfilling** |  | 2026-12-10 | 2027-01-03 |  |  |
| SDR-2-CON-ST-ZA-4130 |  | Backfilling for Manholes | 21d | 2026-12-10 | 2027-01-03 | SDR-2-CON-ST-ZA-4120 | 25d |
|  | 5 | **Catch basin** |  | 2026-11-16 | 2027-04-13 |  |  |
|  | 1 | **Excavation** |  | 2026-11-16 | 2027-01-25 |  |  |
| SDR-2-CON-ST-ZA-6970 |  | Excavation for Catch basin Section 1 | 21d | 2026-11-16 | 2026-12-09 | SDR-2-CON-ST-ZA-4110 | 20d |
| SDR-2-CON-ST-ZA-6410 |  | Excavation for Catch basin Section 2 | 21d | 2026-12-10 | 2027-01-03 | SDR-2-CON-ST-ZA-6970 | 20d |
| SDR-2-CON-ST-ZA-4070 |  | Excavation for Catch basin Section 3 | 19d | 2027-01-04 | 2027-01-25 | SDR-2-CON-ST-ZA-6410 | 20d |
|  | 2 | **bedding Works** |  | 2027-01-26 | 2027-02-18 |  |  |
| SDR-2-CON-ST-ZA-4140 |  | Sand Dedding for Catch basin | 21d | 2027-01-26 | 2027-02-18 | SDR-2-CON-CC-ZG-1660, SDR-2-CON-CC-ZG-1620, SDR-2-CON-ST-ZA-4070 | 20d |
|  | 3 | **Install Catch basin** |  | 2027-02-20 | 2027-03-21 |  |  |
| SDR-2-CON-ST-ZA-4150 |  | Install Catch basin | 21d | 2027-02-20 | 2027-03-21 | SDR-2-CON-ST-ZA-4140, SDR-2-CON-ST-ZA-4050 | 20d |
|  | 4 | **Testing** |  | 2027-03-22 | 2027-04-01 |  |  |
| SDR-2-CON-ST-ZA-4160 |  | Testing for Catch basin pipe | 10d | 2027-03-22 | 2027-04-01 | SDR-2-CON-RW-ZG-1310, SDR-2-CON-ST-ZA-4150 | 20d |
|  | 5 | **Backfilling** |  | 2027-04-03 | 2027-04-13 |  |  |
| SDR-2-CON-ST-ZA-4170 |  | Backfilling for Catch basin | 10d | 2027-04-03 | 2027-04-13 | SDR-2-CON-ST-ZA-4160 | 20d |
|  | 13 | **STORM WATER LINE IN ( PH2-A-MCE0 )** |  | 2026-07-27 | 2027-04-20 |  |  |
|  | 8 | **Pipes Works** |  | 2026-07-27 | 2027-01-19 |  |  |
|  | 1 | **Excavation** |  | 2026-07-27 | 2026-10-13 |  |  |
| SDR-2-CON-ST-ZA-6980 |  | Excavation for GRP Pipes Section 1 | 21d | 2026-07-27 | 2026-08-19 | SDR-2-CON-ST-ZA-6950 SS+5d, SDR-2-PRO-DEL-E-1040, SDR-2-PRO-DEL-E-1070, SDR-2-PRO-DEL-E-1000 | 0d |
| SDR-2-CON-ST-ZA-6420 |  | Excavation for GRP Pipes Section 2 | 21d | 2026-08-20 | 2026-09-13 | SDR-2-CON-ST-ZA-6980, SDR-2-PRO-DES-C-1070 | 12d |
| SDR-2-CON-ST-ZA-4180 |  | Excavation for GRP Pipes Section 3 | 21d | 2026-09-19 | 2026-10-13 | SDR-2-PRO-DES-C-1060, SDR-2-PRO-DES-C-1080, SDR-2-PRO-DES-C-1040, SDR-2-CON-ST-ZA-6420 FS+4d | 12d |
|  | 7 | **bedding Works** |  | 2026-10-14 | 2026-11-07 |  |  |
| SDR-2-CON-ST-ZA-4240 |  | Sand bedding for GRP Pipes | 21d | 2026-10-14 | 2026-11-07 | SDR-2-CON-ST-ZA-4180 | 21d |
|  | 2 | **Pipes Laying** |  | 2026-11-08 | 2026-12-01 |  |  |
| SDR-2-CON-ST-ZA-4190 |  | Install ST GRP Pipes | 21d | 2026-11-08 | 2026-12-01 | SDR-2-PRO-ST-M-1020, SDR-2-CON-ST-ZA-4240 | 21d |
|  | 6 | **Testing** |  | 2026-12-02 | 2026-12-26 |  |  |
| SDR-2-CON-ST-ZA-4230 |  | Testing ST GRP Pipes | 21d | 2026-12-02 | 2026-12-26 | SDR-2-CON-ST-ZA-4190 | 21d |
|  | 3 | **Backfilling** |  | 2026-12-27 | 2027-01-19 |  |  |
| SDR-2-CON-ST-ZA-4200 |  | Backfilling ST GRP Pipes | 21d | 2026-12-27 | 2027-01-19 | SDR-2-CON-ST-ZA-4230 | 21d |

| ID | WBS | Task | Duration | Start | Finish | Predecessors | Total float |
| --- | --- | --- | --- | --- | --- | --- | --- |
|  | 4 | **Manholes** |  | 2026-07-27 | 2027-01-18 |  |  |
|  | 1 | **Excavation** |  | 2026-07-27 | 2026-10-12 |  |  |
| SDR-2-CON-ST-ZA-6990 |  | Excavation Manholes Section 1 | 21d | 2026-07-27 | 2026-08-19 | SDR-2-CON-ST-ZA-6980 SS | 14d |
| SDR-2-CON-ST-ZA-6430 |  | Excavation Manholes Section 2 | 21d | 2026-08-20 | 2026-09-13 | SDR-2-CON-ST-ZA-6990 | 14d |
| SDR-2-CON-ST-ZA-4210 |  | Excavation Manholes Section 3 | 21d | 2026-09-17 | 2026-10-12 | SDR-2-CON-ST-ZA-6430 FS+3d | 14d |
|  | 2 | **bedding Works** |  | 2026-10-13 | 2026-11-05 |  |  |
| SDR-2-CON-ST-ZA-4250 |  | Sand bedding for Manholes | 21d | 2026-10-13 | 2026-11-05 | SDR-2-CON-ST-ZA-4210 | 14d |
|  | 3 | **Install Manholes** |  | 2026-11-07 | 2026-11-30 |  |  |
| SDR-2-CON-ST-ZA-4260 |  | Manholes Installation | 21d | 2026-11-07 | 2026-11-30 | SDR-2-CON-ST-ZA-4250 | 14d |
|  | 4 | **Testing** |  | 2026-12-01 | 2026-12-24 |  |  |
| SDR-2-CON-ST-ZA-4270 |  | Testing for Manholes | 21d | 2026-12-01 | 2026-12-24 | SDR-2-CON-ST-ZA-4260 | 24d |
|  | 5 | **Backfilling** |  | 2026-12-26 | 2027-01-18 |  |  |
| SDR-2-CON-ST-ZA-4280 |  | Backfilling for Manholes | 21d | 2026-12-26 | 2027-01-18 | SDR-2-CON-ST-ZA-4270 | 24d |
|  | 5 | **Catch basin** |  | 2026-12-01 | 2027-04-20 |  |  |
|  | 1 | **Excavation** |  | 2026-12-01 | 2027-01-26 |  |  |
| SDR-2-CON-ST-ZA-6440 |  | Excavation for Catch basin Section 1 | 21d | 2026-12-01 | 2026-12-24 | SDR-2-CON-ST-ZA-4260 | 14d |
| SDR-2-CON-ST-ZA-4220 |  | Excavation for Catch basin Section 2 | 21d | 2027-01-03 | 2027-01-26 | SDR-2-CON-ST-ZA-6440 FS+7d | 14d |
|  | 2 | **bedding Works** |  | 2027-01-27 | 2027-02-20 |  |  |
| SDR-2-CON-ST-ZA-4290 |  | Sand Dedding for Catch basin | 21d | 2027-01-27 | 2027-02-20 | SDR-2-CON-CC-ZG-1620, SDR-2-CON-CC-ZG-1660, SDR-2-CON-ST-ZA-4220 | 14d |
|  | 3 | **Install Catch basin** |  | 2027-02-21 | 2027-03-22 |  |  |
| SDR-2-CON-ST-ZA-4300 |  | Install Catch basin | 21d | 2027-02-21 | 2027-03-22 | SDR-2-CON-ST-ZA-4290 | 14d |
|  | 4 | **Testing** |  | 2027-03-29 | 2027-04-08 |  |  |
| SDR-2-CON-ST-ZA-4310 |  | Testing for Catch basin pipe | 10d | 2027-03-29 | 2027-04-08 | SDR-2-CON-ST-ZA-4300 FS+5d | 14d |
|  | 5 | **Backfilling** |  | 2027-04-10 | 2027-04-20 |  |  |
| SDR-2-CON-ST-ZA-4320 |  | Backfilling for Catch basin | 10d | 2027-04-10 | 2027-04-20 | SDR-2-CON-ST-ZA-3960, SDR-2-CON-ST-ZA-4310, SDR-2-CON-ST-ZA-4280, SDR-2-CON-ST-ZA-4130, SDR-2-CON-ST-ZA-3760 | 14d |
|  | 14 | **STORM WATER LINE IN ( PH2-A-MCF0 )** |  | 2026-08-01 | 2027-04-19 |  |  |
|  | 8 | **Pipes Works** |  | 2026-08-01 | 2027-01-19 |  |  |
|  | 1 | **Excavation** |  | 2026-08-01 | 2026-10-13 |  |  |
| SDR-2-CON-ST-ZA-7000 |  | Excavation for GRP Pipes Section 1 | 21d | 2026-08-01 | 2026-08-24 | SDR-2-CON-ST-ZA-6980 SS+4d, SDR-2-PRO-DEL-E-1130, SDR-2-PRO-DEL-E-1050 | 0d |
| SDR-2-CON-ST-ZA-6450 |  | Excavation for GRP Pipes Section 2 | 21d | 2026-08-25 | 2026-09-17 | SDR-2-CON-ST-ZA-7000 | 15d |
| SDR-2-CON-ST-ZA-4330 |  | Excavation for GRP Pipes Section 3 | 21d | 2026-09-19 | 2026-10-13 | SDR-2-PRO-ST-E-1110, SDR-2-CON-ST-ZA-6450 | 15d |
|  | 7 | **bedding Works** |  | 2026-10-14 | 2026-11-07 |  |  |
| SDR-2-CON-ST-ZA-4390 |  | Sand bedding for GRP Pipes | 21d | 2026-10-14 | 2026-11-07 | SDR-2-CON-ST-ZA-4330 | 21d |
|  | 2 | **Pipes Laying** |  | 2026-11-08 | 2026-12-01 |  |  |
| SDR-2-CON-ST-ZA-4340 |  | Install ST GRP Pipes | 21d | 2026-11-08 | 2026-12-01 | SDR-2-CON-ST-ZA-4390 | 21d |
|  | 6 | **Testing** |  | 2026-12-02 | 2026-12-26 |  |  |
| SDR-2-CON-ST-ZA-4380 |  | Testing ST GRP Pipes | 21d | 2026-12-02 | 2026-12-26 | SDR-2-CON-ST-ZA-4340 | 21d |
|  | 3 | **Backfilling** |  | 2026-12-27 | 2027-01-19 |  |  |
| SDR-2-CON-ST-ZA-4350 |  | Backfilling ST GRP Pipes | 21d | 2026-12-27 | 2027-01-19 | SDR-2-CON-ST-ZA-4380 | 21d |
|  | 4 | **Manholes** |  | 2026-08-01 | 2026-12-26 |  |  |
|  | 1 | **Excavation** |  | 2026-08-01 | 2026-09-17 |  |  |
| SDR-2-CON-ST-ZA-6460 |  | Excavation Manholes Section 1 | 21d | 2026-08-01 | 2026-08-24 | SDR-2-CON-ST-ZA-7000 SS | 14d |
| SDR-2-CON-ST-ZA-4360 |  | Excavation Manholes Section 2 | 21d | 2026-08-25 | 2026-09-17 | SDR-2-CON-ST-ZA-6460 | 14d |
|  | 2 | **bedding Works** |  | 2026-09-19 | 2026-10-13 |  |  |
| SDR-2-CON-ST-ZA-4400 |  | Sand bedding for Manholes | 21d | 2026-09-19 | 2026-10-13 | SDR-2-CON-ST-ZA-4360 | 14d |
|  | 3 | **Install Manholes** |  | 2026-10-14 | 2026-11-07 |  |  |
| SDR-2-CON-ST-ZA-4410 |  | Manholes Installation | 21d | 2026-10-14 | 2026-11-07 | SDR-2-CON-ST-ZA-4400 | 14d |
|  | 4 | **Testing** |  | 2026-11-08 | 2026-12-01 |  |  |
| SDR-2-CON-ST-ZA-4420 |  | Testing for Manholes | 21d | 2026-11-08 | 2026-12-01 | SDR-2-CON-ST-ZA-4410 | 14d |
|  | 5 | **Backfilling** |  | 2026-12-02 | 2026-12-26 |  |  |
| SDR-2-CON-ST-ZA-4430 |  | Backfilling for Manholes | 21d | 2026-12-02 | 2026-12-26 | SDR-2-CON-ST-ZA-4420 | 14d |
|  | 5 | **Catch basin** |  | 2026-11-08 | 2027-04-19 |  |  |
|  | 1 | **Excavation** |  | 2026-11-08 | 2026-12-26 |  |  |
| SDR-2-CON-ST-ZA-6470 |  | Excavation for Catch basin Section 1 | 21d | 2026-11-08 | 2026-12-01 | SDR-2-CON-ST-ZA-4410 | 15d |
| SDR-2-CON-ST-ZA-4370 |  | Excavation for Catch basin Section 2 | 21d | 2026-12-02 | 2026-12-26 | SDR-2-CON-ST-ZA-6470 | 15d |
|  | 2 | **bedding Works** |  | 2026-12-27 | 2027-01-19 |  |  |
| SDR-2-CON-ST-ZA-4440 |  | Sand Dedding for Catch basin | 21d | 2026-12-27 | 2027-01-19 | SDR-2-CON-RW-ZG-2110, SDR-2-CON-ST-ZA-4370 | 15d |
|  | 3 | **Install Catch basin** |  | 2027-01-20 | 2027-02-13 |  |  |
| SDR-2-CON-ST-ZA-4450 |  | Install Catch basin | 21d | 2027-01-20 | 2027-02-13 | SDR-2-CON-ST-ZA-4440 | 15d |
|  | 4 | **Testing** |  | 2027-02-14 | 2027-03-15 |  |  |
| SDR-2-CON-ST-ZA-4460 |  | Testing for Catch basin pipe | 21d | 2027-02-14 | 2027-03-15 | SDR-2-CON-ST-ZA-4450 | 15d |
|  | 5 | **Backfilling** |  | 2027-03-16 | 2027-04-19 |  |  |
| SDR-2-CON-ST-ZA-7010 |  | Backfilling for Catch basin Section 1 | 15d | 2027-03-16 | 2027-04-01 | SDR-2-CON-ST-ZA-4460 | 15d |
| SDR-2-CON-ST-ZA-4470 |  | Backfilling for Catch basin Section 2 | 15d | 2027-04-03 | 2027-04-19 | SDR-2-CON-ST-ZA-7010, SDR-2-CON-RW-ZG-2210 | 15d |
|  | 15 | **STORM WATER LINE IN ( PH2-A-MCG0 )** |  | 2026-08-06 | 2027-04-20 |  |  |
|  | 8 | **Pipes Works** |  | 2026-08-06 | 2026-12-31 |  |  |
|  | 1 | **Excavation** |  | 2026-08-06 | 2026-09-24 |  |  |
| SDR-2-CON-ST-ZA-6480 |  | Excavation for GRP Pipes Section 1 | 21d | 2026-08-06 | 2026-08-30 | SDR-2-CON-ST-ZA-7000 SS+4d, SDR-2-PRO-DEL-E-1030, SDR-2-PRO-DES-E-1020 | 7d |
| SDR-2-CON-ST-ZA-4480 |  | Excavation for GRP Pipes Section 2 | 21d | 2026-08-31 | 2026-09-24 | SDR-2-CON-ST-ZA-6480 | 16d |
|  | 7 | **bedding Works** |  | 2026-09-26 | 2026-10-19 |  |  |

| ID | WBS | Task | Duration | Start | Finish | Predecessors | Total float |
| --- | --- | --- | --- | --- | --- | --- | --- |
| SDR-2-CON-ST-ZA-4540 |  | Sand bedding for GRP Pipes | 21d | 2026-09-26 | 2026-10-19 | SDR-2-CON-ST-ZA-4480 | 16d |
|  | 2 | **Pipes Laying** |  | 2026-10-20 | 2026-11-12 |  |  |
| SDR-2-CON-ST-ZA-4490 |  | Install ST GRP Pipes | 21d | 2026-10-20 | 2026-11-12 | SDR-2-CON-ST-ZA-4540 | 16d |
|  | 6 | **Testing** |  | 2026-11-14 | 2026-12-07 |  |  |
| SDR-2-CON-ST-ZA-4530 |  | Testing ST GRP Pipes | 21d | 2026-11-14 | 2026-12-07 | SDR-2-CON-ST-ZA-4490 | 16d |
|  | 3 | **Backfilling** |  | 2026-12-08 | 2026-12-31 |  |  |
| SDR-2-CON-ST-ZA-4500 |  | Backfilling ST GRP Pipes | 21d | 2026-12-08 | 2026-12-31 | SDR-2-CON-ST-ZA-4530 | 16d |
|  | 4 | **Manholes** |  | 2026-08-06 | 2027-01-04 |  |  |
|  | 1 | **Excavation** |  | 2026-08-06 | 2026-09-28 |  |  |
| SDR-2-CON-ST-ZA-6490 |  | Excavation Manholes Section 1 | 21d | 2026-08-06 | 2026-08-30 | SDR-2-CON-ST-ZA-6480 SS | 10d |
| SDR-2-CON-ST-ZA-4510 |  | Excavation Manholes Section 2 | 21d | 2026-09-03 | 2026-09-28 | SDR-2-CON-ST-ZA-6490 FS+3d | 10d |
|  | 2 | **bedding Works** |  | 2026-09-29 | 2026-10-22 |  |  |
| SDR-2-CON-ST-ZA-4550 |  | Sand bedding for Manholes | 21d | 2026-09-29 | 2026-10-22 | SDR-2-CON-ST-ZA-4510 | 10d |
|  | 3 | **Install Manholes** |  | 2026-10-24 | 2026-11-16 |  |  |
| SDR-2-CON-ST-ZA-4560 |  | Manholes Installation | 21d | 2026-10-24 | 2026-11-16 | SDR-2-CON-ST-ZA-4550 | 10d |
|  | 4 | **Testing** |  | 2026-11-17 | 2026-12-10 |  |  |
| SDR-2-CON-ST-ZA-4570 |  | Testing for Manholes | 21d | 2026-11-17 | 2026-12-10 | SDR-2-CON-ST-ZA-4560 | 10d |
|  | 5 | **Backfilling** |  | 2026-12-12 | 2027-01-04 |  |  |
| SDR-2-CON-ST-ZA-4580 |  | Backfilling for Manholes | 21d | 2026-12-12 | 2027-01-04 | SDR-2-CON-RW-ZG-2110, SDR-2-CON-ST-ZA-4570 | 10d |
|  | 5 | **Catch basin** |  | 2026-11-17 | 2027-04-20 |  |  |
|  | 1 | **Excavation** |  | 2026-11-17 | 2027-01-10 |  |  |
| SDR-2-CON-ST-ZA-6500 |  | Excavation for Catch basin Section 1 | 21d | 2026-11-17 | 2026-12-10 | SDR-2-CON-ST-ZA-4560 | 14d |
| SDR-2-CON-ST-ZA-4520 |  | Excavation for Catch basin Section 2 | 21d | 2026-12-17 | 2027-01-10 | SDR-2-CON-ST-ZA-6500 FS+5d | 14d |
|  | 2 | **bedding Works** |  | 2027-01-11 | 2027-02-03 |  |  |
| SDR-2-CON-ST-ZA-4590 |  | Sand Dedding for Catch basin | 21d | 2027-01-11 | 2027-02-03 | SDR-2-MILS-1100, SDR-2-CON-ST-ZA-4520 | 14d |
|  | 3 | **Install Catch basin** |  | 2027-02-04 | 2027-03-01 |  |  |
| SDR-2-CON-ST-ZA-4600 |  | Install Catch basin | 21d | 2027-02-04 | 2027-03-01 | SDR-2-CON-ST-ZA-4590 | 14d |
|  | 4 | **Testing** |  | 2027-03-02 | 2027-03-17 |  |  |
| SDR-2-CON-ST-ZA-4610 |  | Testing for Catch basin pipe | 10d | 2027-03-02 | 2027-03-17 | SDR-2-CON-ST-ZA-4600 | 14d |
|  | 5 | **Backfilling** |  | 2027-03-18 | 2027-04-20 |  |  |
| SDR-2-CON-ST-ZA-7020 |  | Backfilling for Catch basin Section 1 | 14d | 2027-03-18 | 2027-04-03 | SDR-2-CON-ST-ZA-4610 | 14d |
| SDR-2-CON-ST-ZA-4620 |  | Backfilling for Catch basin Section 2 | 15d | 2027-04-04 | 2027-04-20 | SDR-2-CON-ST-ZA-7020, SDR-2-CON-RW-ZG-2060 | 14d |
|  | 16 | **STORM WATER LINE IN ( PH2-A-MCH0 )** |  | 2026-08-06 | 2027-04-20 |  |  |
|  | 8 | **Pipes Works** |  | 2026-08-06 | 2026-12-31 |  |  |
|  | 1 | **Excavation** |  | 2026-08-06 | 2026-09-24 |  |  |
| SDR-2-CON-ST-ZA-6510 |  | Excavation for GRP Pipes Section 1 | 21d | 2026-08-06 | 2026-08-30 | SDR-2-CON-ST-ZA-6480 SS | 7d |
| SDR-2-CON-ST-ZA-4630 |  | Excavation for GRP Pipes Section 2 | 21d | 2026-08-31 | 2026-09-24 | SDR-2-CON-ST-ZA-6510 | 7d |
|  | 7 | **bedding Works** |  | 2026-09-26 | 2026-10-19 |  |  |
| SDR-2-CON-ST-ZA-4690 |  | Sand bedding for GRP Pipes | 21d | 2026-09-26 | 2026-10-19 | SDR-2-CON-ST-ZA-4630 | 16d |
|  | 2 | **Pipes Laying** |  | 2026-10-20 | 2026-11-12 |  |  |
| SDR-2-CON-ST-ZA-4640 |  | Install ST GRP Pipes | 21d | 2026-10-20 | 2026-11-12 | SDR-2-CON-ST-ZA-4690 | 16d |
|  | 6 | **Testing** |  | 2026-11-14 | 2026-12-07 |  |  |
| SDR-2-CON-ST-ZA-4680 |  | Testing ST GRP Pipes | 21d | 2026-11-14 | 2026-12-07 | SDR-2-CON-ST-ZA-4640 | 16d |
|  | 3 | **Backfilling** |  | 2026-12-08 | 2026-12-31 |  |  |
| SDR-2-CON-ST-ZA-4650 |  | Backfilling ST GRP Pipes | 21d | 2026-12-08 | 2026-12-31 | SDR-2-CON-RW-ZG-2500, SDR-2-CON-ST-ZA-4680 | 16d |
|  | 4 | **Manholes** |  | 2026-08-06 | 2027-01-04 |  |  |
|  | 1 | **Excavation** |  | 2026-08-06 | 2026-09-28 |  |  |
| SDR-2-CON-ST-ZA-6520 |  | Excavation Manholes Section 1 | 21d | 2026-08-06 | 2026-08-30 | SDR-2-CON-ST-ZA-6510 SS | 14d |
| SDR-2-CON-ST-ZA-6350 |  | Excavation Manholes Section 2 | 21d | 2026-09-03 | 2026-09-28 | SDR-2-CON-ST-ZA-6520 FS+3d | 14d |
|  | 2 | **bedding Works** |  | 2026-09-29 | 2026-10-22 |  |  |
| SDR-2-CON-ST-ZA-4700 |  | Sand bedding for Manholes | 21d | 2026-09-29 | 2026-10-22 | SDR-2-CON-ST-ZA-6350 | 14d |
|  | 3 | **Install Manholes** |  | 2026-10-24 | 2026-11-16 |  |  |
| SDR-2-CON-ST-ZA-4710 |  | Manholes Installation | 21d | 2026-10-24 | 2026-11-16 | SDR-2-CON-ST-ZA-4700 | 14d |
|  | 4 | **Testing** |  | 2026-11-17 | 2026-12-10 |  |  |
| SDR-2-CON-ST-ZA-4720 |  | Testing for Manholes | 21d | 2026-11-17 | 2026-12-10 | SDR-2-CON-ST-ZA-4710 | 18d |
|  | 5 | **Backfilling** |  | 2026-12-12 | 2027-01-04 |  |  |
| SDR-2-CON-ST-ZA-4730 |  | Backfilling for Manholes | 21d | 2026-12-12 | 2027-01-04 | SDR-2-CON-ST-ZA-4720 | 18d |
|  | 5 | **Catch basin** |  | 2026-11-17 | 2027-04-20 |  |  |
|  | 1 | **Excavation** |  | 2026-11-17 | 2027-01-04 |  |  |
| SDR-2-CON-ST-ZA-6530 |  | Excavation for Catch basin Section 1 | 21d | 2026-11-17 | 2026-12-10 | SDR-2-CON-ST-ZA-4710 | 14d |
| SDR-2-CON-ST-ZA-4670 |  | Excavation for Catch basin Section 2 | 21d | 2026-12-12 | 2027-01-04 | SDR-2-CON-ST-ZA-6530 | 14d |
|  | 2 | **bedding Works** |  | 2027-01-05 | 2027-01-28 |  |  |
| SDR-2-CON-ST-ZA-4740 |  | Sand Dedding for Catch basin | 21d | 2027-01-05 | 2027-01-28 | SDR-2-CON-ST-ZA-4670 | 14d |
|  | 3 | **Install Catch basin** |  | 2027-02-04 | 2027-03-01 |  |  |
| SDR-2-CON-ST-ZA-4750 |  | Install Catch basin | 21d | 2027-02-04 | 2027-03-01 | SDR-2-CON-ST-ZA-4740 FS+5d | 14d |
|  | 4 | **Testing** |  | 2027-03-02 | 2027-03-17 |  |  |
| SDR-2-CON-ST-ZA-4760 |  | Testing for Catch basin pipe | 10d | 2027-03-02 | 2027-03-17 | SDR-2-CON-ST-ZA-4750 | 14d |
|  | 5 | **Backfilling** |  | 2027-03-18 | 2027-04-20 |  |  |
| SDR-2-CON-ST-ZA-7030 |  | Backfilling for Catch basin Section 1 | 14d | 2027-03-18 | 2027-04-03 | SDR-2-CON-ST-ZA-4760 | 14d |
| SDR-2-CON-ST-ZA-4770 |  | Backfilling for Catch basin Section 2 | 15d | 2027-04-04 | 2027-04-20 | SDR-2-CON-ST-ZA-7030, SDR-2-CON-RW-ZG-1910 | 14d |

| ID | WBS | Task | Duration | Start | Finish | Predecessors | Total float |
| --- | --- | --- | --- | --- | --- | --- | --- |
|  | 1 | **STORM WATER LINE IN ( PH2-A-MCA0 )** |  | 2026-08-05 | 2027-04-18 |  |  |
|  | 8 | **Pipes Works** |  | 2026-08-05 | 2027-01-09 |  |  |
|  | 1 | **Excavation** |  | 2026-08-05 | 2026-09-22 |  |  |
| SDR-2-CON-ST-ZA-6540 |  | Excavation for GRP Pipes Section 1 | 21d | 2026-08-05 | 2026-08-29 | SDR-2-CON-ST-ZA-6360 SS | 5d |
| SDR-2-CON-ST-ZA-4780 |  | Excavation for GRP Pipes Section 2 | 21d | 2026-08-30 | 2026-09-22 | SDR-2-CON-ST-ZA-6540 | 5d |
|  | 7 | **bedding Works** |  | 2026-09-24 | 2026-10-18 |  |  |
| SDR-2-CON-ST-ZA-4840 |  | Sand bedding for GRP Pipes | 21d | 2026-09-24 | 2026-10-18 | SDR-2-CON-ST-ZA-4780 | 20d |
|  | 2 | **Pipes Laying** |  | 2026-10-19 | 2026-11-11 |  |  |
| SDR-2-CON-ST-ZA-4790 |  | Install ST GRP Pipes | 21d | 2026-10-19 | 2026-11-11 | SDR-2-CON-ST-ZA-4840 | 20d |
|  | 6 | **Testing** |  | 2026-11-12 | 2026-12-06 |  |  |
| SDR-2-CON-ST-ZA-4830 |  | Testing ST GRP Pipes | 21d | 2026-11-12 | 2026-12-06 | SDR-2-CON-ST-ZA-4790 | 20d |
|  | 3 | **Backfilling** |  | 2026-12-16 | 2027-01-09 |  |  |
| SDR-2-CON-ST-ZA-4800 |  | Backfilling ST GRP Pipes | 21d | 2026-12-16 | 2027-01-09 | SDR-2-CON-ST-ZA-4830 FS+8d | 20d |
|  | 4 | **Manholes** |  | 2026-08-05 | 2026-12-30 |  |  |
|  | 1 | **Excavation** |  | 2026-08-05 | 2026-09-22 |  |  |
| SDR-2-CON-ST-ZA-6550 |  | Excavation Manholes Section 1 | 21d | 2026-08-05 | 2026-08-29 | SDR-2-CON-ST-ZA-6540 SS | 14d |
| SDR-2-CON-ST-ZA-4810 |  | Excavation Manholes Section 2 | 21d | 2026-08-30 | 2026-09-22 | SDR-2-CON-ST-ZA-6550 | 14d |
|  | 2 | **bedding Works** |  | 2026-09-24 | 2026-10-18 |  |  |
| SDR-2-CON-ST-ZA-4850 |  | Sand bedding for Manholes | 21d | 2026-09-24 | 2026-10-18 | SDR-2-CON-ST-ZA-4810 | 14d |
|  | 3 | **Install Manholes** |  | 2026-10-19 | 2026-11-11 |  |  |
| SDR-2-CON-ST-ZA-4860 |  | Manholes Installation | 21d | 2026-10-19 | 2026-11-11 | SDR-2-CON-ST-ZA-4850 | 14d |
|  | 4 | **Testing** |  | 2026-11-12 | 2026-12-06 |  |  |
| SDR-2-CON-ST-ZA-4870 |  | Testing for Manholes | 21d | 2026-11-12 | 2026-12-06 | SDR-2-CON-ST-ZA-4860 | 14d |
|  | 5 | **Backfilling** |  | 2026-12-07 | 2026-12-30 |  |  |
| SDR-2-CON-ST-ZA-4880 |  | Backfilling for Manholes | 21d | 2026-12-07 | 2026-12-30 | SDR-2-CON-ST-ZA-4870 | 14d |
|  | 5 | **Catch basin** |  | 2026-11-12 | 2027-04-18 |  |  |
|  | 1 | **Excavation** |  | 2026-11-12 | 2027-01-06 |  |  |
| SDR-2-CON-ST-ZA-6560 |  | Excavation for Catch basin Section 1 | 21d | 2026-11-12 | 2026-12-06 | SDR-2-CON-ST-ZA-4860 | 16d |
| SDR-2-CON-ST-ZA-4820 |  | Excavation for Catch basin Section 2 | 21d | 2026-12-14 | 2027-01-06 | SDR-2-CON-ST-ZA-6560 FS+6d | 16d |
|  | 2 | **bedding Works** |  | 2027-01-07 | 2027-01-31 |  |  |
| SDR-2-CON-ST-ZA-4890 |  | Sand Dedding for Catch basin | 21d | 2027-01-07 | 2027-01-31 | SDR-2-CON-ST-ZA-4820 | 16d |
|  | 3 | **Install Catch basin** |  | 2027-02-01 | 2027-02-25 |  |  |
| SDR-2-CON-ST-ZA-4900 |  | Install Catch basin | 21d | 2027-02-01 | 2027-02-25 | SDR-2-CON-ST-ZA-4890 | 16d |
|  | 4 | **Testing** |  | 2027-02-27 | 2027-03-16 |  |  |
| SDR-2-CON-ST-ZA-4910 |  | Testing for Catch basin pipe | 12d | 2027-02-27 | 2027-03-16 | SDR-2-CON-ST-ZA-4900 | 16d |
|  | 5 | **Backfilling** |  | 2027-03-17 | 2027-04-18 |  |  |
| SDR-2-CON-ST-ZA-7040 |  | Backfilling for Catch basin Section 1 | 14d | 2027-03-17 | 2027-04-01 | SDR-2-CON-ST-ZA-4910 | 16d |
| SDR-2-CON-ST-ZA-4920 |  | Backfilling for Catch basin Section 2 | 14d | 2027-04-03 | 2027-04-18 | SDR-2-CON-ST-ZA-7040 | 16d |
|  | 17 | **STORM WATER LINE IN From MH - A2 / 2 TO STA-A2/10** |  | 2026-08-10 | 2027-04-20 |  |  |
|  | 8 | **Pipes Works** |  | 2026-08-10 | 2027-01-04 |  |  |
|  | 1 | **Excavation** |  | 2026-08-10 | 2026-09-28 |  |  |
| SDR-2-CON-ST-ZA-6570 |  | Excavation for GRP Pipes Section 1 | 21d | 2026-08-10 | 2026-09-02 | SDR-2-CON-ST-ZA-6540 SS+4d | 8d |
| SDR-2-CON-ST-ZA-4930 |  | Excavation for GRP Pipes Section 2 | 21d | 2026-09-03 | 2026-09-28 | SDR-2-CON-ST-ZA-6570 | 24d |
|  | 7 | **bedding Works** |  | 2026-09-29 | 2026-10-22 |  |  |
| SDR-2-CON-ST-ZA-4990 |  | Sand bedding for GRP Pipes | 21d | 2026-09-29 | 2026-10-22 | SDR-2-CON-ST-ZA-4930 | 24d |
|  | 2 | **Pipes Laying** |  | 2026-10-24 | 2026-11-16 |  |  |
| SDR-2-CON-ST-ZA-4940 |  | Install ST GRP Pipes | 21d | 2026-10-24 | 2026-11-16 | SDR-2-CON-ST-ZA-4990 | 24d |
|  | 6 | **Testing** |  | 2026-11-17 | 2026-12-10 |  |  |
| SDR-2-CON-ST-ZA-4980 |  | Testing ST GRP Pipes | 21d | 2026-11-17 | 2026-12-10 | SDR-2-CON-RW-ZG-2500, SDR-2-CON-ST-ZA-4940 | 24d |
|  | 3 | **Backfilling** |  | 2026-12-12 | 2027-01-04 |  |  |
| SDR-2-CON-ST-ZA-4950 |  | Backfilling ST GRP Pipes | 21d | 2026-12-12 | 2027-01-04 | SDR-2-CON-ST-ZA-4980 | 24d |
|  | 4 | **Manholes** |  | 2026-08-10 | 2027-01-04 |  |  |
|  | 1 | **Excavation** |  | 2026-08-10 | 2026-09-28 |  |  |
| SDR-2-CON-ST-ZA-6580 |  | Excavation Manholes Section 1 | 21d | 2026-08-10 | 2026-09-02 | SDR-2-CON-ST-ZA-6570 SS | 24d |
| SDR-2-CON-ST-ZA-4960 |  | Excavation Manholes Section 2 | 21d | 2026-09-03 | 2026-09-28 | SDR-2-CON-ST-ZA-6580 | 24d |
|  | 2 | **bedding Works** |  | 2026-09-29 | 2026-10-22 |  |  |
| SDR-2-CON-ST-ZA-5000 |  | Sand bedding for Manholes | 21d | 2026-09-29 | 2026-10-22 | SDR-2-CON-ST-ZA-4960 | 24d |
|  | 3 | **Install Manholes** |  | 2026-10-24 | 2026-11-16 |  |  |
| SDR-2-CON-ST-ZA-5010 |  | Manholes Installation | 21d | 2026-10-24 | 2026-11-16 | SDR-2-CON-ST-ZA-5000 | 24d |
|  | 4 | **Testing** |  | 2026-11-17 | 2026-12-10 |  |  |
| SDR-2-CON-ST-ZA-5020 |  | Testing for Manholes | 21d | 2026-11-17 | 2026-12-10 | SDR-2-CON-ST-ZA-5010 | 24d |
|  | 5 | **Backfilling** |  | 2026-12-12 | 2027-01-04 |  |  |
| SDR-2-CON-ST-ZA-5030 |  | Backfilling for Manholes | 21d | 2026-12-12 | 2027-01-04 | SDR-2-CON-ST-ZA-5020 | 24d |
|  | 5 | **Catch basin** |  | 2026-11-17 | 2027-04-20 |  |  |
|  | 1 | **Excavation** |  | 2026-11-17 | 2027-01-10 |  |  |
| SDR-2-CON-ST-ZA-6590 |  | Excavation for Catch basin Section 1 | 21d | 2026-11-17 | 2026-12-10 | SDR-2-CON-ST-ZA-5010 | 26d |
| SDR-2-CON-ST-ZA-4970 |  | Excavation for Catch basin Section 2 | 21d | 2026-12-17 | 2027-01-10 | SDR-2-CON-ST-ZA-6590 FS+5d | 26d |
|  | 2 | **bedding Works** |  | 2027-01-11 | 2027-02-03 |  |  |
| SDR-2-CON-ST-ZA-5040 |  | Sand Dedding for Catch basin | 21d | 2027-01-11 | 2027-02-03 | SDR-2-CON-ST-ZA-4970 | 26d |
|  | 3 | **Install Catch basin** |  | 2027-02-04 | 2027-03-01 |  |  |

| ID | WBS | Task | Duration | Start | Finish | Predecessors | Total float |
| --- | --- | --- | --- | --- | --- | --- | --- |
| SDR-2-CON-ST-ZA-5050 |  | Install Catch basin | 21d | 2027-02-04 | 2027-03-01 | SDR-2-CON-ST-ZA-5040 | 26d |
|  | 4 | **Testing** |  | 2027-03-02 | 2027-03-20 |  |  |
| SDR-2-CON-ST-ZA-5060 |  | Testing for Catch basin pipe | 12d | 2027-03-02 | 2027-03-20 | SDR-2-CON-ST-ZA-5050 | 26d |
|  | 5 | **Backfilling** |  | 2027-03-21 | 2027-04-20 |  |  |
| SDR-2-CON-ST-ZA-7050 |  | Backfilling for Catch basin Section 1 | 15d | 2027-03-21 | 2027-04-06 | SDR-2-CON-ST-ZA-5060 | 26d |
| SDR-2-CON-ST-ZA-5070 |  | Backfilling for Catch basin Section 2 | 12d | 2027-04-07 | 2027-04-20 | SDR-2-CON-ST-ZA-7050 | 26d |
|  | 18 | **STORM WATER LINE From STA-A2/10 TO STA-A2/1** |  | 2026-08-15 | 2027-04-19 |  |  |
|  | 8 | **Pipes Works** |  | 2026-08-15 | 2027-01-09 |  |  |
|  | 1 | **Excavation** |  | 2026-08-15 | 2026-10-03 |  |  |
| SDR-2-CON-ST-ZA-6600 |  | Excavation for GRP Pipes Section 1 | 21d | 2026-08-15 | 2026-09-07 | SDR-2-CON-ST-ZA-6570 SS+4d | 8d |
| SDR-2-CON-ST-ZA-5080 |  | Excavation for GRP Pipes Section 2 | 21d | 2026-09-08 | 2026-10-03 | SDR-2-CON-ST-ZA-6600 | 9d |
|  | 7 | **bedding Works** |  | 2026-10-04 | 2026-10-27 |  |  |
| SDR-2-CON-ST-ZA-5140 |  | Sand bedding for GRP Pipes | 21d | 2026-10-04 | 2026-10-27 | SDR-2-CON-ST-ZA-5080 | 9d |
|  | 2 | **Pipes Laying** |  | 2026-10-28 | 2026-11-21 |  |  |
| SDR-2-CON-ST-ZA-5090 |  | Install ST GRP Pipes | 21d | 2026-10-28 | 2026-11-21 | SDR-2-CON-ST-ZA-5140 | 9d |
|  | 6 | **Testing** |  | 2026-11-22 | 2026-12-15 |  |  |
| SDR-2-CON-ST-ZA-5130 |  | Testing ST GRP Pipes | 21d | 2026-11-22 | 2026-12-15 | SDR-2-CON-ST-ZA-5090 | 9d |
|  | 3 | **Backfilling** |  | 2026-12-16 | 2027-01-09 |  |  |
| SDR-2-CON-ST-ZA-5100 |  | Backfilling ST GRP Pipes | 21d | 2026-12-16 | 2027-01-09 | SDR-2-CON-ST-ZA-5130 | 9d |
|  | 4 | **Manholes** |  | 2026-08-15 | 2027-01-09 |  |  |
|  | 1 | **Excavation** |  | 2026-08-15 | 2026-10-03 |  |  |
| SDR-2-CON-ST-ZA-6610 |  | Excavation Manholes Section 1 | 21d | 2026-08-15 | 2026-09-07 | SDR-2-CON-ST-ZA-6600 SS | 8d |
| SDR-2-CON-ST-ZA-5110 |  | Excavation Manholes Section 2 | 21d | 2026-09-08 | 2026-10-03 | SDR-2-CON-ST-ZA-6610 | 8d |
|  | 2 | **bedding Works** |  | 2026-10-04 | 2026-10-27 |  |  |
| SDR-2-CON-ST-ZA-5150 |  | Sand bedding for Manholes | 21d | 2026-10-04 | 2026-10-27 | SDR-2-CON-ST-ZA-5110 | 8d |
|  | 3 | **Install Manholes** |  | 2026-10-28 | 2026-11-21 |  |  |
| SDR-2-CON-ST-ZA-5160 |  | Manholes Installation | 21d | 2026-10-28 | 2026-11-21 | SDR-2-CON-ST-ZA-5150 | 8d |
|  | 4 | **Testing** |  | 2026-11-22 | 2026-12-15 |  |  |
| SDR-2-CON-ST-ZA-5170 |  | Testing for Manholes | 21d | 2026-11-22 | 2026-12-15 | SDR-2-CON-ST-ZA-5160 | 8d |
|  | 5 | **Backfilling** |  | 2026-12-16 | 2027-01-09 |  |  |
| SDR-2-CON-ST-ZA-5180 |  | Backfilling for Manholes | 21d | 2026-12-16 | 2027-01-09 | SDR-2-CON-ST-ZA-5170 | 8d |
|  | 5 | **Catch basin** |  | 2026-11-22 | 2027-04-19 |  |  |
|  | 1 | **Excavation** |  | 2026-11-22 | 2027-01-09 |  |  |
| SDR-2-CON-ST-ZA-6620 |  | Excavation for Catch basin Section 1 | 21d | 2026-11-22 | 2026-12-15 | SDR-2-CON-ST-ZA-5160 | 15d |
| SDR-2-CON-ST-ZA-5120 |  | Excavation for Catch basin Section 2 | 21d | 2026-12-16 | 2027-01-09 | SDR-2-CON-ST-ZA-6620 | 15d |
|  | 2 | **bedding Works** |  | 2027-01-10 | 2027-02-02 |  |  |
| SDR-2-CON-ST-ZA-5190 |  | Sand Dedding for Catch basin | 21d | 2027-01-10 | 2027-02-02 | SDR-2-CON-ST-ZA-5120 | 15d |
|  | 3 | **Install Catch basin** |  | 2027-02-03 | 2027-02-28 |  |  |
| SDR-2-CON-ST-ZA-5200 |  | Install Catch basin | 21d | 2027-02-03 | 2027-02-28 | SDR-2-CON-ST-ZA-5190, SDR-2-CON-ST-ZA-4200 | 15d |
|  | 4 | **Testing** |  | 2027-03-01 | 2027-03-18 |  |  |
| SDR-2-CON-ST-ZA-5210 |  | Testing for Catch basin pipe | 12d | 2027-03-01 | 2027-03-18 | SDR-2-CON-ST-ZA-5200 | 15d |
|  | 5 | **Backfilling** |  | 2027-03-20 | 2027-04-19 |  |  |
| SDR-2-CON-ST-ZA-7060 |  | Backfilling for Catch basin Section 1 | 13d | 2027-03-20 | 2027-04-03 | SDR-2-CON-ST-ZA-5210 | 15d |
| SDR-2-CON-ST-ZA-5220 |  | Backfilling for Catch basin Section 2 | 14d | 2027-04-04 | 2027-04-19 | SDR-2-CON-ST-ZA-7060 | 15d |
|  | 19 | **STORM WATER LINE From IP A7 To Pond A** |  | 2026-08-19 | 2027-04-15 |  |  |
|  | 8 | **Pipes Works** |  | 2026-08-19 | 2027-01-17 |  |  |
|  | 1 | **Excavation** |  | 2026-08-19 | 2026-10-11 |  |  |
| SDR-2-CON-ST-ZA-6630 |  | Excavation for GRP Pipes Section 1 | 21d | 2026-08-19 | 2026-09-12 | SDR-2-CON-ST-ZA-6600 SS+4d | 18d |
| SDR-2-CON-ST-ZA-5830 |  | Excavation for GRP Pipes Section 2 | 21d | 2026-09-16 | 2026-10-11 | SDR-2-CON-ST-ZA-6630 FS+3d | 19d |
|  | 7 | **bedding Works** |  | 2026-10-12 | 2026-11-04 |  |  |
| SDR-2-CON-ST-ZA-5890 |  | Sand bedding for GRP Pipes | 21d | 2026-10-12 | 2026-11-04 | SDR-2-CON-ST-ZA-5830 | 19d |
|  | 2 | **Pipes Laying** |  | 2026-11-05 | 2026-11-29 |  |  |
| SDR-2-CON-ST-ZA-5840 |  | Install ST GRP Pipes | 21d | 2026-11-05 | 2026-11-29 | SDR-2-CON-ST-ZA-5890 | 19d |
|  | 6 | **Testing** |  | 2026-11-30 | 2026-12-23 |  |  |
| SDR-2-CON-ST-ZA-5880 |  | Testing ST GRP Pipes | 21d | 2026-11-30 | 2026-12-23 | SDR-2-CON-ST-ZA-5840 | 19d |
|  | 3 | **Backfilling** |  | 2026-12-24 | 2027-01-17 |  |  |
| SDR-2-CON-ST-ZA-5850 |  | Backfilling ST GRP Pipes | 21d | 2026-12-24 | 2027-01-17 | SDR-2-CON-ST-ZA-5880 | 19d |
|  | 4 | **Manholes** |  | 2026-08-19 | 2027-01-17 |  |  |
|  | 1 | **Excavation** |  | 2026-08-19 | 2026-10-11 |  |  |
| SDR-2-CON-ST-ZA-6640 |  | Excavation Manholes Section 1 | 21d | 2026-08-19 | 2026-09-12 | SDR-2-CON-ST-ZA-6630 SS | 18d |
| SDR-2-CON-ST-ZA-5860 |  | Excavation Manholes Section 2 | 21d | 2026-09-16 | 2026-10-11 | SDR-2-CON-ST-ZA-6640 FS+3d | 18d |
|  | 2 | **bedding Works** |  | 2026-10-12 | 2026-11-04 |  |  |
| SDR-2-CON-ST-ZA-5900 |  | Sand bedding for Manholes | 21d | 2026-10-12 | 2026-11-04 | SDR-2-CON-ST-ZA-5860 | 18d |
|  | 3 | **Install Manholes** |  | 2026-11-05 | 2026-11-29 |  |  |
| SDR-2-CON-ST-ZA-5910 |  | Manholes Installation | 21d | 2026-11-05 | 2026-11-29 | SDR-2-CON-ST-ZA-5900 | 18d |
|  | 4 | **Testing** |  | 2026-11-30 | 2026-12-23 |  |  |
| SDR-2-CON-ST-ZA-5920 |  | Testing for Manholes | 21d | 2026-11-30 | 2026-12-23 | SDR-2-CON-ST-ZA-5910 | 19d |
|  | 5 | **Backfilling** |  | 2026-12-24 | 2027-01-17 |  |  |
| SDR-2-CON-ST-ZA-5930 |  | Backfilling for Manholes | 21d | 2026-12-24 | 2027-01-17 | SDR-2-CON-ST-ZA-5920 | 19d |
|  | 5 | **Catch basin** |  | 2026-11-30 | 2027-04-15 |  |  |

| ID | WBS | Task | Duration | Start | Finish | Predecessors | Total float |
| --- | --- | --- | --- | --- | --- | --- | --- |
|  | 1 | **Excavation** |  | 2026-11-30 | 2027-01-17 |  |  |
| SDR-2-CON-ST-ZA-6650 |  | Excavation for Catch basin Section 1 | 21d | 2026-11-30 | 2026-12-23 | SDR-2-CON-ST-ZA-5910 | 18d |
| SDR-2-CON-ST-ZA-5870 |  | Excavation for Catch basin Section 2 | 21d | 2026-12-24 | 2027-01-17 | SDR-2-CON-ST-ZA-6650 | 18d |
|  | 2 | **bedding Works** |  | 2027-01-18 | 2027-02-10 |  |  |
| SDR-2-CON-ST-ZA-5940 |  | Sand Dedding for Catch basin | 21d | 2027-01-18 | 2027-02-10 | SDR-2-CON-ST-ZA-5870 | 18d |
|  | 3 | **Install Catch basin** |  | 2027-02-11 | 2027-03-08 |  |  |
| SDR-2-CON-ST-ZA-5950 |  | Install Catch basin | 21d | 2027-02-11 | 2027-03-08 | SDR-2-CON-ST-ZA-5940 | 18d |
|  | 4 | **Testing** |  | 2027-03-14 | 2027-03-22 |  |  |
| SDR-2-CON-ST-ZA-5960 |  | Testing for Catch basin pipe | 8d | 2027-03-14 | 2027-03-22 | SDR-2-CON-ST-ZA-5950 | 18d |
|  | 5 | **Backfilling** |  | 2027-03-23 | 2027-04-15 |  |  |
| SDR-2-CON-ST-ZA-5970 |  | Backfilling for Catch basin | 21d | 2027-03-23 | 2027-04-15 | SDR-2-CON-ST-ZA-5960, SDR-2-CON-ST-ZA-5930 FS+10d, SDR-2-CON-ST-ZA-5180 | 18d |
|  | 2 | **Concrete Box culverts** |  | 2026-07-13 | 2026-11-05 |  |  |
|  | 6 | **For Pond A** |  | 2026-09-08 | 2026-10-24 |  |  |
|  | 1 | **Excavation** |  | 2026-09-08 | 2026-09-19 |  |  |
| SDR-2-CON-ST-ZA-3270 |  | Excavation for Box Culvert. | 10d | 2026-09-08 | 2026-09-19 | SDR-2-CON-ST-ZA-5080 SS, SDR-2-CON-ST-ZA-6140 | 12d |
|  | 2 | **Backfilling with common / suitable excavated material** |  | 2026-09-20 | 2026-09-29 |  |  |
| SDR-2-CON-ST-ZA-3280 |  | Backfilling with common / suitable excavated material or with suitable imported material | 8d | 2026-09-20 | 2026-09-29 | SDR-2-CON-ST-ZA-3270 | 12d |
|  | 3 | **Plain Concrete** |  | 2026-09-30 | 2026-10-06 |  |  |
| SDR-2-CON-ST-ZA-3290 |  | Plain Concrete for box culvert | 6d | 2026-09-30 | 2026-10-06 | SDR-2-CON-ST-ZA-3280 | 12d |
|  | 4 | **Steel Reinforcement** |  | 2026-10-07 | 2026-10-15 |  |  |
| SDR-2-CON-ST-ZA-3300 |  | Steel Reinforcement for box culverts | 8d | 2026-10-07 | 2026-10-15 | SDR-2-CON-ST-ZA-3290 | 12d |
|  | 5 | **Reinforced Concrete** |  | 2026-10-17 | 2026-10-24 |  |  |
| SDR-2-CON-ST-ZA-3310 |  | Reinforced Concrete for box culvert | 7d | 2026-10-17 | 2026-10-24 | SDR-2-CON-ST-ZA-3300 | 12d |
|  | 7 | **For Pond B** |  | 2026-07-13 | 2026-08-26 |  |  |
|  | 1 | **Excavation** |  | 2026-07-13 | 2026-07-23 |  |  |
| SDR-2-CON-ST-ZA-6250 |  | Excavation for Box Culvert. | 10d | 2026-07-13 | 2026-07-23 | SDR-2-CON-RW-ZA-2870, SDR-2-PRO-ST-E-1010 FF | 12d |
|  | 2 | **Backfilling with common / suitable excavated material** |  | 2026-07-25 | 2026-08-02 |  |  |
| SDR-2-CON-ST-ZA-6260 |  | Backfilling with common / suitable excavated material or with suitable imported material | 8d | 2026-07-25 | 2026-08-02 | SDR-2-CON-ST-ZA-6250 | 12d |
|  | 3 | **Plain Concrete** |  | 2026-08-03 | 2026-08-09 |  |  |
| SDR-2-CON-ST-ZA-6270 |  | Plain Concrete for box culvert | 6d | 2026-08-03 | 2026-08-09 | SDR-2-CON-ST-ZA-6260 | 12d |
|  | 4 | **Steel Reinforcement** |  | 2026-08-10 | 2026-08-18 |  |  |
| SDR-2-CON-ST-ZA-6280 |  | Steel Reinforcement for box culverts | 8d | 2026-08-10 | 2026-08-18 | SDR-2-CON-ST-ZA-6270 | 12d |
|  | 5 | **Reinforced Concrete** |  | 2026-08-19 | 2026-08-26 |  |  |
| SDR-2-CON-ST-ZA-6290 |  | Reinforced Concrete for box culvert | 7d | 2026-08-19 | 2026-08-26 | SDR-2-CON-ST-ZA-6280 | 18d |
|  | 8 | **For Pond C** |  | 2026-08-06 | 2026-11-05 |  |  |
|  | 1 | **Excavation** |  | 2026-08-06 | 2026-08-17 |  |  |
| SDR-2-CON-ST-ZA-6300 |  | Excavation for Box Culvert. | 10d | 2026-08-06 | 2026-08-17 | SDR-2-CON-ST-ZA-3320 SS | 23d |
|  | 2 | **Backfilling with common / suitable excavated material** |  | 2026-08-18 | 2026-08-26 |  |  |
| SDR-2-CON-ST-ZA-6310 |  | Backfilling with common / suitable excavated material or with suitable imported material | 8d | 2026-08-18 | 2026-08-26 | SDR-2-CON-ST-ZA-6300 | 23d |
|  | 3 | **Plain Concrete** |  | 2026-08-27 | 2026-09-02 |  |  |
| SDR-2-CON-ST-ZA-6320 |  | Plain Concrete for box culvert | 6d | 2026-08-27 | 2026-09-02 | SDR-2-CON-ST-ZA-6310 | 23d |
|  | 4 | **Steel Reinforcement** |  | 2026-09-03 | 2026-09-12 |  |  |
| SDR-2-CON-ST-ZA-6330 |  | Steel Reinforcement for box culverts | 8d | 2026-09-03 | 2026-09-12 | SDR-2-CON-ST-ZA-6320 | 23d |
|  | 5 | **Reinforced Concrete** |  | 2026-10-29 | 2026-11-05 |  |  |
| SDR-2-CON-ST-ZA-6340 |  | Reinforced Concrete for box culvert | 7d | 2026-10-29 | 2026-11-05 | SDR-2-CON-ST-ZA-6330 FS+8d, SDR-2-CON-ST-ZA-6290 FS+6d, SDR-2-CON-ST-ZA-3310 FS+4d | 21d |
|  | 3 | **Drainage works for ponds and open canals** |  | 2026-03-30 | 2027-03-03 |  |  |
|  | 7 | **Pond A** |  | 2026-03-30 | 2026-11-28 |  |  |
|  | 2 | **Access road for Storm water Ponds** |  | 2026-03-30 | 2026-04-16 |  |  |
| SDR-2-CON-ST-ZA-6140 |  | Embankments with common / suitable excavated material | 16d | 2026-03-30 | 2026-04-16 | SDR-2-CON-RW-ZA-1010 | 17d |
|  | 1 | **Excavation** |  | 2026-04-18 | 2026-07-23 |  |  |
| SDR-2-CON-ST-ZA-6660 |  | Excavation for cutting material Section 1 | 20d | 2026-04-18 | 2026-05-10 | SDR-2-CON-ST-ZA-6140 | 25d |
| SDR-2-CON-ST-ZA-6670 |  | Excavation for cutting material Section 2 | 20d | 2026-05-11 | 2026-06-07 | SDR-2-CON-ST-ZA-6660 | 25d |
| SDR-2-CON-ST-ZA-6680 |  | Excavation for cutting material Section 3 | 20d | 2026-06-08 | 2026-06-30 | SDR-2-CON-ST-ZA-6670 | 25d |
| SDR-2-CON-ST-ZA-6130 |  | Excavation for cutting material Section 4 | 20d | 2026-07-01 | 2026-07-23 | SDR-2-CON-ST-ZA-6680 | 25d |
|  | 3 | **Sand lining for pond bed** |  | 2026-07-25 | 2026-09-14 |  |  |
| SDR-2-CON-ST-ZA-6690 |  | Sand lining for pond bed Section 1 & Section 2 | 21d | 2026-07-25 | 2026-08-17 | SDR-2-CON-ST-ZA-6710, SDR-2-CON-ST-ZA-6130 | 25d |
| SDR-2-CON-ST-ZA-6150 |  | Sand lining for pond bed Section 3 & Section 4 | 21d | 2026-08-22 | 2026-09-14 | SDR-2-CON-ST-ZA-6690 FS+3d | 25d |
|  | 6 | **Pipe Encasements,** |  | 2026-09-15 | 2026-10-10 |  |  |
| SDR-2-CON-ST-ZA-6180 |  | Pipe encasement | 21d | 2026-09-15 | 2026-10-10 | SDR-2-CON-ST-ZA-6150 | 25d |
|  | 5 | **Concrete Outfalls** |  | 2026-10-11 | 2026-11-03 |  |  |
| SDR-2-CON-ST-ZA-6170 |  | Concrete Outfall structure. | 21d | 2026-10-11 | 2026-11-03 | SDR-2-CON-ST-ZA-6180 | 25d |
|  | 4 | **Loose Riprap** |  | 2026-11-04 | 2026-11-28 |  |  |
| SDR-2-CON-ST-ZA-6160 |  | Loose Riprap work | 21d | 2026-11-04 | 2026-11-28 | SDR-2-CON-ST-ZA-6170 | 25d |
|  | 8 | **Pond B** |  | 2026-05-02 | 2027-03-03 |  |  |
|  | 2 | **Access road for Storm water Ponds** |  | 2026-05-02 | 2026-05-18 |  |  |
| SDR-2-CON-ST-ZA-6200 |  | Embankments with common / suitable excavated material | 15d | 2026-05-02 | 2026-05-18 | SDR-2-CON-ST-ZA-6140 FS+12d | 17d |
|  | 1 | **Excavation** |  | 2026-05-19 | 2026-08-12 |  |  |
| SDR-2-CON-ST-ZA-6700 |  | Excavation for cutting material. Section 1 | 21d | 2026-05-19 | 2026-06-16 | SDR-2-CON-ST-ZA-6200 | 17d |
| SDR-2-CON-ST-ZA-6710 |  | Excavation for cutting material. Section 2 | 21d | 2026-06-17 | 2026-07-11 | SDR-2-CON-ST-ZA-6700 | 17d |
| SDR-2-CON-ST-ZA-6190 |  | Excavation for cutting material. Section 3 | 21d | 2026-07-20 | 2026-08-12 | SDR-2-CON-ST-ZA-6710 FS+7d | 17d |

| ID | WBS | Task | Duration | Start | Finish | Predecessors | Total float |
| --- | --- | --- | --- | --- | --- | --- | --- |
|  | 3 | **Sand lining for pond bed** |  | 2026-11-03 | 2026-12-19 |  |  |
| SDR-2-CON-ST-ZA-6720 |  | Sand lining for pond bed Section 1 | 21d | 2026-11-03 | 2026-11-26 | SDR-2-CON-ST-ZA-6190, SDR-2-CON-ST-ZA-6340 SS+4d | 22d |
| SDR-2-CON-ST-ZA-6210 |  | Sand lining for pond bed Section 2 | 19d | 2026-11-28 | 2026-12-19 | SDR-2-CON-ST-ZA-6720 | 22d |
|  | 6 | **Pipe Encasements,** |  | 2026-12-20 | 2027-01-12 |  |  |
| SDR-2-CON-ST-ZA-6240 |  | Pipe encasement | 21d | 2026-12-20 | 2027-01-12 | SDR-2-CON-ST-ZA-6210 | 22d |
|  | 5 | **Concrete Outfalls** |  | 2027-01-13 | 2027-02-06 |  |  |
| SDR-2-CON-ST-ZA-6230 |  | Concrete Outfall structure. | 21d | 2027-01-13 | 2027-02-06 | SDR-2-CON-ST-ZA-6240 | 22d |
|  | 4 | **Loose Riprap** |  | 2027-02-07 | 2027-03-03 |  |  |
| SDR-2-CON-ST-ZA-6220 |  | Loose Riprap work | 21d | 2027-02-07 | 2027-03-03 | SDR-2-CON-ST-ZA-6230, SDR-2-CON-ST-ZA-5930 FS+14d, SDR-2-CON-ST-ZA-5180 FS+11d, SDR-2-CON-ST-ZA-5030 FS+9d, SDR-2-CON-ST-ZA-4880 FS+14d, SDR-2-CON-ST-ZA-4730 FS+7d, SDR-2-CON-ST-ZA-4580 FS+5d, SDR-2-CON-ST-ZA-4430, SDR-2-CON-ST-ZA-4280 FS+14d, SDR-2-CON-ST-ZA-4130, SDR-2-CON-ST-ZA-3760 FF | 22d |
|  | 9 | **Pond C** |  | 2026-05-19 | 2026-12-29 |  |  |
|  | 2 | **Access road for Storm water Ponds** |  | 2026-05-19 | 2026-06-09 |  |  |
| SDR-2-CON-ST-ZA-3330 |  | Embankments with common / suitable excavated material | 15d | 2026-05-19 | 2026-06-09 | SDR-2-CON-ST-ZA-6200 | 23d |
|  | 1 | **Excavation** |  | 2026-06-10 | 2026-08-30 |  |  |
| SDR-2-CON-ST-ZA-6730 |  | Excavation for cutting material. Section 1 | 21d | 2026-06-10 | 2026-07-04 | SDR-2-CON-ST-ZA-3330 | 23d |
| SDR-2-CON-ST-ZA-6740 |  | Excavation for cutting material. Section 2 | 21d | 2026-07-08 | 2026-08-01 | SDR-2-CON-ST-ZA-6730 FS+3d | 23d |
| SDR-2-CON-ST-ZA-3320 |  | Excavation for cutting material. Section 3 | 21d | 2026-08-06 | 2026-08-30 | SDR-2-CON-ST-ZA-6740 FS+4d | 23d |
|  | 3 | **Sand lining for pond bed** |  | 2026-08-31 | 2026-10-17 |  |  |
| SDR-2-CON-ST-ZA-6750 |  | Sand lining for pond bed Section 1 | 20d | 2026-08-31 | 2026-09-22 | SDR-2-CON-ST-ZA-3320 | 29d |
| SDR-2-CON-ST-ZA-3340 |  | Sand lining for pond bed Section 2 &Section 3 | 20d | 2026-09-24 | 2026-10-17 | SDR-2-CON-ST-ZA-6750 | 29d |
|  | 6 | **Pipe Encasements,** |  | 2026-10-18 | 2026-11-10 |  |  |
| SDR-2-CON-ST-ZA-3370 |  | Pipe encasement | 21d | 2026-10-18 | 2026-11-10 | SDR-2-CON-ST-ZA-3340 | 29d |
|  | 5 | **Concrete Outfalls** |  | 2026-11-11 | 2026-12-05 |  |  |
| SDR-2-CON-ST-ZA-3360 |  | Concrete Outfall structure. | 21d | 2026-11-11 | 2026-12-05 | SDR-2-CON-ST-ZA-3370 | 29d |
|  | 4 | **Loose Riprap** |  | 2026-12-06 | 2026-12-29 |  |  |
| SDR-2-CON-ST-ZA-3350 |  | Loose Riprap work | 21d | 2026-12-06 | 2026-12-29 | SDR-2-CON-ST-ZA-3360 | 29d |
|  | ZG | **ZONE G** |  | 2026-08-01 | 2027-05-04 |  |  |
|  | 11 | **STORM WATER LINE IN ( PH2-G-MCE0 )** |  | 2026-08-01 | 2027-05-01 |  |  |
|  | 8 | **Pipes Works** |  | 2026-08-01 | 2027-01-19 |  |  |
|  | 1 | **Excavation** |  | 2026-08-01 | 2026-10-13 |  |  |
| SDR-2-CON-ST-ZA-6880 |  | Excavation for GRP Pipes Section 1 | 21d | 2026-08-01 | 2026-08-24 | SDR-2-CON-ST-ZA-7000 SS | 0d |
| SDR-2-CON-ST-ZA-6760 |  | Excavation for GRP Pipes Section 2 | 21d | 2026-08-25 | 2026-09-17 | SDR-2-CON-ST-ZA-6880, SDR-2-CON-ST-ZA-6710 | 3d |
| SDR-2-CON-ST-ZA-5380 |  | Excavation for GRP Pipes Section 3 | 21d | 2026-09-19 | 2026-10-13 | SDR-2-CON-ST-ZA-6760 | 3d |
|  | 7 | **bedding Works** |  | 2026-10-14 | 2026-11-07 |  |  |
| SDR-2-CON-ST-ZA-5440 |  | Sand bedding for GRP Pipes | 21d | 2026-10-14 | 2026-11-07 | SDR-2-CON-ST-ZA-5380 | 21d |
|  | 2 | **Pipes Laying** |  | 2026-11-08 | 2026-12-01 |  |  |
| SDR-2-CON-ST-ZA-5390 |  | Install ST GRP Pipes | 21d | 2026-11-08 | 2026-12-01 | SDR-2-CON-ST-ZA-5440 | 21d |
|  | 6 | **Testing** |  | 2026-12-02 | 2026-12-26 |  |  |
| SDR-2-CON-ST-ZA-5430 |  | Testing ST GRP Pipes | 21d | 2026-12-02 | 2026-12-26 | SDR-2-CON-ST-ZA-5390 | 21d |
|  | 3 | **Backfilling** |  | 2026-12-27 | 2027-01-19 |  |  |
| SDR-2-CON-ST-ZA-5400 |  | Backfilling ST GRP Pipes | 21d | 2026-12-27 | 2027-01-19 | SDR-2-CON-ST-ZA-5430 | 21d |
|  | 4 | **Manholes** |  | 2026-08-01 | 2027-02-23 |  |  |
|  | 1 | **Excavation** |  | 2026-08-01 | 2026-10-17 |  |  |
| SDR-2-CON-ST-ZA-6890 |  | Excavation Manholes Section 1 | 21d | 2026-08-01 | 2026-08-24 | SDR-2-CON-ST-ZA-6880 SS | 17d |
| SDR-2-CON-ST-ZA-6770 |  | Excavation Manholes Section 2 | 21d | 2026-08-25 | 2026-09-17 | SDR-2-CON-ST-ZA-6890 | 17d |
| SDR-2-CON-ST-ZA-5410 |  | Excavation Manholes Section 3 | 21d | 2026-09-22 | 2026-10-17 | SDR-2-CON-ST-ZA-6770 FS+3d | 17d |
|  | 2 | **bedding Works** |  | 2026-10-18 | 2026-11-10 |  |  |
| SDR-2-CON-ST-ZA-5450 |  | Sand bedding for Manholes | 21d | 2026-10-18 | 2026-11-10 | SDR-2-CON-ST-ZA-5410 | 17d |
|  | 3 | **Install Manholes** |  | 2026-11-11 | 2027-01-04 |  |  |
| SDR-2-CON-ST-ZA-6780 |  | Manholes Installation Section 1 | 21d | 2026-11-11 | 2026-12-05 | SDR-2-CON-ST-ZA-5450 | 17d |
| SDR-2-CON-ST-ZA-5460 |  | Manholes Installation Section 2 | 21d | 2026-12-12 | 2027-01-04 | SDR-2-CON-ST-ZA-6780 FS+5d | 17d |
|  | 4 | **Testing** |  | 2027-01-05 | 2027-01-28 |  |  |
| SDR-2-CON-ST-ZA-5470 |  | Testing for Manholes | 21d | 2027-01-05 | 2027-01-28 | SDR-2-CON-ST-ZA-5460 | 17d |
|  | 5 | **Backfilling** |  | 2027-01-30 | 2027-02-23 |  |  |
| SDR-2-CON-ST-ZA-5480 |  | Backfilling for Manholes | 21d | 2027-01-30 | 2027-02-23 | SDR-2-CON-ST-ZA-5470 | 17d |
|  | 5 | **Catch basin** |  | 2026-12-06 | 2027-05-01 |  |  |
|  | 1 | **Excavation** |  | 2026-12-06 | 2027-01-26 |  |  |
| SDR-2-CON-ST-ZA-6790 |  | Excavation for Catch basin Section 1 | 21d | 2026-12-06 | 2026-12-29 | SDR-2-CON-ST-ZA-6890, SDR-2-CON-ST-ZA-6780 | 18d |
| SDR-2-CON-ST-ZA-5420 |  | Excavation for Catch basin Section 2 | 21d | 2027-01-03 | 2027-01-26 | SDR-2-CON-ST-ZA-6790 FS+3d | 18d |
|  | 2 | **bedding Works** |  | 2027-01-27 | 2027-02-20 |  |  |
| SDR-2-CON-ST-ZA-5490 |  | Sand Dedding for Catch basin | 21d | 2027-01-27 | 2027-02-20 | SDR-2-CON-ST-ZA-5420 | 18d |
|  | 3 | **Install Catch basin** |  | 2027-02-21 | 2027-03-22 |  |  |
| SDR-2-CON-ST-ZA-5500 |  | Install Catch basin | 21d | 2027-02-21 | 2027-03-22 | SDR-2-CON-ST-ZA-5490 | 18d |
|  | 4 | **Testing** |  | 2027-03-23 | 2027-03-31 |  |  |
| SDR-2-CON-ST-ZA-5510 |  | Testing for Catch basin pipe | 8d | 2027-03-23 | 2027-03-31 | SDR-2-CON-ST-ZA-6220, SDR-2-CON-ST-ZA-5500 | 18d |
|  | 5 | **Backfilling** |  | 2027-04-01 | 2027-05-01 |  |  |
| SDR-2-CON-ST-ZA-6870 |  | Backfilling for Catch basin Part 1 | 13d | 2027-04-01 | 2027-04-15 | SDR-2-CON-ST-ZA-5510 | 18d |
| SDR-2-CON-ST-ZA-5520 |  | Backfilling for Catch basin Part 2 | 13d | 2027-04-17 | 2027-05-01 | SDR-2-CON-ST-ZA-6870 | 18d |
|  | 12 | **STORM WATER LINE IN ( PH2-G-MCF0 )** |  | 2026-08-05 | 2027-05-04 |  |  |
|  | 8 | **Pipes Works** |  | 2026-08-05 | 2026-12-30 |  |  |
|  | 1 | **Excavation** |  | 2026-08-05 | 2026-09-22 |  |  |

| ID | WBS | Task | Duration | Start | Finish | Predecessors | Total float |
| --- | --- | --- | --- | --- | --- | --- | --- |
| SDR-2-CON-ST-ZA-6800 |  | Excavation for GRP Pipes Section 1 | 21d | 2026-08-05 | 2026-08-29 | SDR-2-CON-ST-ZA-6880 SS+4d | 0d |
| SDR-2-CON-ST-ZA-5530 |  | Excavation for GRP Pipes Section 2 | 21d | 2026-08-30 | 2026-09-22 | SDR-2-CON-ST-ZA-6800 | 13d |
|  | 7 | **bedding Works** |  | 2026-09-24 | 2026-10-18 |  |  |
| SDR-2-CON-ST-ZA-5590 |  | Sand bedding for GRP Pipes | 21d | 2026-09-24 | 2026-10-18 | SDR-2-CON-ST-ZA-5530 | 16d |
|  | 2 | **Pipes Laying** |  | 2026-10-19 | 2026-11-11 |  |  |
| SDR-2-CON-ST-ZA-5540 |  | Install ST GRP Pipes | 21d | 2026-10-19 | 2026-11-11 | SDR-2-CON-ST-ZA-5590 | 16d |
|  | 6 | **Testing** |  | 2026-11-12 | 2026-12-06 |  |  |
| SDR-2-CON-ST-ZA-5580 |  | Testing ST GRP Pipes | 21d | 2026-11-12 | 2026-12-06 | SDR-2-CON-ST-ZA-5540 | 16d |
|  | 3 | **Backfilling** |  | 2026-12-07 | 2026-12-30 |  |  |
| SDR-2-CON-ST-ZA-5550 |  | Backfilling ST GRP Pipes | 21d | 2026-12-07 | 2026-12-30 | SDR-2-CON-ST-ZA-5580 | 16d |
|  | 4 | **Manholes** |  | 2026-08-05 | 2027-01-09 |  |  |
|  | 1 | **Excavation** |  | 2026-08-05 | 2026-09-27 |  |  |
| SDR-2-CON-ST-ZA-6810 |  | Excavation Manholes Section 1 | 21d | 2026-08-05 | 2026-08-29 | SDR-2-CON-ST-ZA-6800 SS | 18d |
| SDR-2-CON-ST-ZA-5560 |  | Excavation Manholes Section 2 | 21d | 2026-09-02 | 2026-09-27 | SDR-2-CON-ST-ZA-6810 FS+3d | 18d |
|  | 2 | **bedding Works** |  | 2026-09-28 | 2026-10-21 |  |  |
| SDR-2-CON-ST-ZA-5600 |  | Sand bedding for Manholes | 21d | 2026-09-28 | 2026-10-21 | SDR-2-PRO-ST-E-1110, SDR-2-CON-ST-ZA-5560 | 18d |
|  | 3 | **Install Manholes** |  | 2026-10-22 | 2026-11-15 |  |  |
| SDR-2-CON-ST-ZA-5610 |  | Manholes Installation | 21d | 2026-10-22 | 2026-11-15 | SDR-2-CON-ST-ZA-5600 | 18d |
|  | 4 | **Testing** |  | 2026-11-22 | 2026-12-15 |  |  |
| SDR-2-CON-ST-ZA-5620 |  | Testing for Manholes | 21d | 2026-11-22 | 2026-12-15 | SDR-2-CON-ST-ZA-5610 FS+5d | 20d |
|  | 5 | **Backfilling** |  | 2026-12-16 | 2027-01-09 |  |  |
| SDR-2-CON-ST-ZA-5630 |  | Backfilling for Manholes | 21d | 2026-12-16 | 2027-01-09 | SDR-2-CON-ST-ZA-5620 | 20d |
|  | 5 | **Catch basin** |  | 2026-11-16 | 2027-05-04 |  |  |
|  | 1 | **Excavation** |  | 2026-11-16 | 2027-01-03 |  |  |
| SDR-2-CON-ST-ZA-6820 |  | Excavation for Catch basin Section 1 | 21d | 2026-11-16 | 2026-12-09 | SDR-2-CON-ST-ZA-5610 | 18d |
| SDR-2-CON-ST-ZA-5570 |  | Excavation for Catch basin Section 2 | 21d | 2026-12-10 | 2027-01-03 | SDR-2-CON-ST-ZA-6820 | 18d |
|  | 2 | **bedding Works** |  | 2027-01-04 | 2027-01-27 |  |  |
| SDR-2-CON-ST-ZA-5640 |  | Sand Dedding for Catch basin | 21d | 2027-01-04 | 2027-01-27 | SDR-2-CON-ST-ZA-5570 | 18d |
|  | 3 | **Install Catch basin** |  | 2027-01-28 | 2027-03-23 |  |  |
| SDR-2-CON-ST-ZA-6830 |  | Install Catch basin Section 1 | 21d | 2027-01-28 | 2027-02-21 | SDR-2-CON-ST-ZA-5640 | 18d |
| SDR-2-CON-ST-ZA-5650 |  | Install Catch basin Section 2 | 21d | 2027-02-23 | 2027-03-23 | SDR-2-CON-ST-ZA-5640, SDR-2-CON-ST-ZA-4200, SDR-2-CON-ST-ZA-4350, SDR-2-CON-ST-ZA-4500, SDR-2-CON-ST-ZA-4650, SDR-2-CON-ST-ZA-4800, SDR-2-CON-ST-ZA-4950, SDR-2-CON-ST-ZA-5100, SDR-2-CON-ST-ZA-5850, SDR-2-CON-ST-ZA-5400 FS+4d, SDR-2-CON-ST-ZA-5550, SDR-2-CON-ST-ZA-6830 | 18d |
|  | 4 | **Testing** |  | 2027-03-24 | 2027-04-17 |  |  |
| SDR-2-CON-ST-ZA-5660 |  | Testing for Catch basin pipe | 21d | 2027-03-24 | 2027-04-17 | SDR-2-CON-ST-ZA-5650 | 18d |
|  | 5 | **Backfilling** |  | 2027-04-18 | 2027-05-04 |  |  |
| SDR-2-CON-ST-ZA-5670 |  | Backfilling for Catch basin | 15d | 2027-04-18 | 2027-05-04 | SDR-2-CON-ST-ZA-5660 | 18d |
|  | 13 | **STORM WATER LINE IN ( PH2-G-MCG0 )** |  | 2026-08-10 | 2027-04-25 |  |  |
|  | 8 | **Pipes Works** |  | 2026-08-10 | 2027-01-13 |  |  |
|  | 1 | **Excavation** |  | 2026-08-10 | 2026-10-07 |  |  |
| SDR-2-CON-ST-ZA-6840 |  | Excavation for GRP Pipes Section 1 | 21d | 2026-08-10 | 2026-09-02 | SDR-2-CON-ST-ZA-6800 SS+4d | 0d |
| SDR-2-CON-ST-ZA-5980 |  | Excavation for GRP Pipes Section 2 | 21d | 2026-09-13 | 2026-10-07 | SDR-2-CON-ST-ZA-6840 FS+8d | 0d |
|  | 7 | **bedding Works** |  | 2026-10-08 | 2026-11-01 |  |  |
| SDR-2-CON-ST-ZA-6040 |  | Sand bedding for GRP Pipes | 21d | 2026-10-08 | 2026-11-01 | SDR-2-CON-ST-ZA-5980 | 20d |
|  | 2 | **Pipes Laying** |  | 2026-11-02 | 2026-11-25 |  |  |
| SDR-2-CON-ST-ZA-5990 |  | Install ST GRP Pipes | 21d | 2026-11-02 | 2026-11-25 | SDR-2-CON-ST-ZA-6040 | 20d |
|  | 6 | **Testing** |  | 2026-11-26 | 2026-12-20 |  |  |
| SDR-2-CON-ST-ZA-6030 |  | Testing ST GRP Pipes | 21d | 2026-11-26 | 2026-12-20 | SDR-2-CON-ST-ZA-5990 | 20d |
|  | 3 | **Backfilling** |  | 2026-12-21 | 2027-01-13 |  |  |
| SDR-2-CON-ST-ZA-6000 |  | Backfilling ST GRP Pipes | 21d | 2026-12-21 | 2027-01-13 | SDR-2-CON-ST-ZA-6030 | 20d |
|  | 4 | **Manholes** |  | 2026-08-10 | 2027-01-07 |  |  |
|  | 1 | **Excavation** |  | 2026-08-10 | 2026-10-01 |  |  |
| SDR-2-CON-ST-ZA-6850 |  | Excavation Manholes Section 1 | 21d | 2026-08-10 | 2026-09-02 | SDR-2-CON-ST-ZA-6840 SS | 9.2d |
| SDR-2-CON-ST-ZA-6010 |  | Excavation Manholes Section 2 | 21d | 2026-09-07 | 2026-10-01 | SDR-2-CON-ST-ZA-6850 FS+3d | 9.2d |
|  | 2 | **bedding Works** |  | 2026-10-03 | 2026-10-26 |  |  |
| SDR-2-CON-ST-ZA-6050 |  | Sand bedding for Manholes | 21d | 2026-10-03 | 2026-10-26 | SDR-2-PRO-ST-E-1110, SDR-2-PRO-DEL-E-1160, SDR-2-CON-ST-ZA-6010 | 9.2d |
|  | 3 | **Install Manholes** |  | 2026-10-27 | 2026-11-19 |  |  |
| SDR-2-CON-ST-ZA-6060 |  | Manholes Installation | 21d | 2026-10-27 | 2026-11-19 | SDR-2-CON-ST-ZA-6050 | 9.2d |
|  | 4 | **Testing** |  | 2026-11-21 | 2026-12-14 |  |  |
| SDR-2-CON-ST-ZA-6070 |  | Testing for Manholes | 21d | 2026-11-21 | 2026-12-14 | SDR-2-CON-ST-ZA-6060 | 21d |
|  | 5 | **Backfilling** |  | 2026-12-15 | 2027-01-07 |  |  |
| SDR-2-CON-ST-ZA-6080 |  | Backfilling for Manholes | 21d | 2026-12-15 | 2027-01-07 | SDR-2-CON-ST-ZA-6070 | 21d |
|  | 5 | **Catch basin** |  | 2026-12-12 | 2027-04-25 |  |  |
|  | 1 | **Excavation** |  | 2026-12-12 | 2027-01-26 |  |  |
| SDR-2-CON-ST-ZA-6860 |  | Excavation for Catch basin Section 1 | 20d | 2026-12-12 | 2027-01-03 | SDR-2-CON-ST-ZA-6060 FS+18d | 9.2d |
| SDR-2-CON-ST-ZA-6020 |  | Excavation for Catch basin Section 2 | 20d | 2027-01-04 | 2027-01-26 | SDR-2-CON-ST-ZA-6860 | 9.2d |
|  | 2 | **bedding Works** |  | 2027-01-27 | 2027-02-20 |  |  |
| SDR-2-CON-ST-ZA-6090 |  | Sand Dedding for Catch basin | 21d | 2027-01-27 | 2027-02-20 | SDR-2-CON-ST-ZA-6020 | 9.2d |
|  | 3 | **Install Catch basin** |  | 2027-02-21 | 2027-03-22 |  |  |
| SDR-2-CON-ST-ZA-6100 |  | Install Catch basin | 21d | 2027-02-21 | 2027-03-22 | SDR-2-CON-ST-ZA-6090 | 9.2d |
|  | 4 | **Testing** |  | 2027-03-23 | 2027-03-31 |  |  |
| SDR-2-CON-ST-ZA-6110 |  | Testing for Catch basin pipe | 8d | 2027-03-23 | 2027-03-31 | SDR-2-CON-ST-ZA-6100 | 9.2d |

| ID | WBS | Task | Duration | Start | Finish | Predecessors | Total float |
| --- | --- | --- | --- | --- | --- | --- | --- |
|  | 5 | **Backfilling** |  | 2027-04-01 | 2027-04-25 |  |  |
| SDR-2-CON-ST-ZA-6120 |  | Backfilling for Catch basin | 21d | 2027-04-01 | 2027-04-25 | SDR-2-CON-ST-ZA-6110 | 9.2d |
|  | SN | **Sewerage Network** |  | 2026-09-24 | 2027-04-05 |  |  |
|  | ZA | **ZONE A** |  | 2026-09-24 | 2027-04-05 |  |  |
|  | 3 | **LINE 1 ( PH2-A-MCA0 )** |  | 2026-09-24 | 2027-02-25 |  |  |
|  | 7 | **Pipes Work** |  | 2026-09-24 | 2027-02-20 |  |  |
|  | 1 | **Excavation** |  | 2026-09-24 | 2026-11-14 |  |  |
| SDR-2-CON-SE-ZA-2460 |  | Excavation for GRP Pipe 200mm Diameter Section 1 | 21d | 2026-09-24 | 2026-10-18 | SDR-2-CON-ST-ZA-4780 | 5d |
| SDR-2-CON-SE-ZA-1000 |  | Excavation for GRP Pipe 200mm Diameter Section 2 | 20d | 2026-10-22 | 2026-11-14 | SDR-2-PRO-DEL-E-1190, SDR-2-PRO-DEL-E-1180, SDR-2-PRO-DEL-E-1170, SDR-2-PRO-DES-C-1020, SDR-2-CON-SE-ZA-2460 FS+3d | 5d |
|  | 5 | **bedding Works** |  | 2026-11-15 | 2026-12-08 |  |  |
| SDR-2-CON-SE-ZA-1420 |  | Sand bedding for GRP Pipe 200mm Diameter | 21d | 2026-11-15 | 2026-12-08 | SDR-2-CON-SE-ZA-1000 | 26d |
|  | 2 | **Pipes Laying** |  | 2026-12-09 | 2027-01-02 |  |  |
| SDR-2-CON-SE-ZA-1010 |  | 200 mm GRP Pipe Laying | 21d | 2026-12-09 | 2027-01-02 | SDR-2-CON-SE-ZA-1000, SDR-2-CON-SE-ZA-1420 | 26d |
|  | 3 | **Testing** |  | 2027-01-03 | 2027-01-26 |  |  |
| SDR-2-CON-SE-ZA-1020 |  | Testing of 200 mm GRP Pipe. | 21d | 2027-01-03 | 2027-01-26 | SDR-2-CON-RW-ZA-1760 FS+3d, SDR-2-CON-SE-ZA-1010 | 26d |
|  | 6 | **Backfilling** |  | 2027-01-27 | 2027-02-20 |  |  |
| SDR-2-CON-SE-ZA-1430 |  | Backfilling of 200 mm GRP Pipe. | 21d | 2027-01-27 | 2027-02-20 | SDR-2-CON-SE-ZA-1020 | 26d |
|  | 4 | **Manholes** |  | 2026-09-24 | 2027-02-25 |  |  |
|  | 1 | **Excavation** |  | 2026-09-24 | 2026-11-11 |  |  |
| SDR-2-CON-SE-ZA-2470 |  | Excavation for manhole. Section 1 | 21d | 2026-09-24 | 2026-10-18 | SDR-2-CON-SE-ZA-2460 SS | 20d |
| SDR-2-CON-SE-ZA-1030 |  | Excavation for manhole. Section 2 | 21d | 2026-10-19 | 2026-11-11 | SDR-2-CON-RW-ZA-3400, SDR-2-CON-RW-ZA-1040, SDR-2-CON-SE-ZA-2470 | 20d |
|  | 2 | **bedding Works** |  | 2026-11-19 | 2026-12-13 |  |  |
| SDR-2-CON-SE-ZA-1450 |  | Sand bedding for manhole. | 21d | 2026-11-19 | 2026-12-13 | SDR-2-CON-RW-ZA-2480, SDR-2-CON-SE-ZA-1030 | 14d |
|  | 3 | **Install Manholes** |  | 2026-12-14 | 2027-01-06 |  |  |
| SDR-2-CON-SE-ZA-1040 |  | Manhole Installation | 21d | 2026-12-14 | 2027-01-06 | SDR-2-CON-RW-ZA-3110, SDR-2-CON-SE-ZA-1030, SDR-2-PRO-ST-M-1030, SDR-2-PRO-MAS-C-1070, SDR-2-CON-SE-ZA-1450 | 14d |
|  | 4 | **Testing** |  | 2027-01-07 | 2027-01-31 |  |  |
| SDR-2-CON-SE-ZA-1050 |  | Testing | 21d | 2027-01-07 | 2027-01-31 | SDR-2-CON-RW-ZA-2900, SDR-2-CON-SE-ZA-1040, SDR-2-CON-SE-ZA-1040 FF | 14d |
|  | 5 | **Backfilling** |  | 2027-02-01 | 2027-02-25 |  |  |
| SDR-2-CON-SE-ZA-1440 |  | Backfilling | 21d | 2027-02-01 | 2027-02-25 | SDR-2-CON-SE-ZA-1050, SDR-2-CON-ST-ZA-6080 FS+11d, SDR-2-CON-ST-ZA-6000 FS+9d, SDR-2-CON-ST-ZA-5630 FS+10d | 14d |
|  | 4 | **LINE 2 AND LINE 3 ( PH2-A-MCC0 )** |  | 2026-10-06 | 2027-03-17 |  |  |
|  | 7 | **Pipes Work** |  | 2026-10-06 | 2027-03-17 |  |  |
|  | 1 | **Excavation** |  | 2026-10-06 | 2026-11-30 |  |  |
| SDR-2-CON-SE-ZA-2480 |  | Excavation for GRP Pipe 200mm Diameter Section 1 | 21d | 2026-10-06 | 2026-10-29 | SDR-2-CON-SE-ZA-2460 SS+10d | 19d |
| SDR-2-CON-SE-ZA-1460 |  | Excavation for GRP Pipe 200mm Diameter Section 2 | 20d | 2026-11-08 | 2026-11-30 | SDR-2-CON-RW-ZA-3420, SDR-2-CON-SE-ZA-2480 FS+7d | 19d |
|  | 5 | **bedding Works** |  | 2026-12-01 | 2026-12-24 |  |  |
| SDR-2-CON-SE-ZA-1520 |  | Sand bedding for GRP Pipe 200mm Diameter | 21d | 2026-12-01 | 2026-12-24 | SDR-2-CON-SE-ZA-1460 | 22d |
|  | 2 | **Pipes Laying** |  | 2026-12-29 | 2027-01-21 |  |  |
| SDR-2-CON-SE-ZA-1470 |  | 200 mm GRP Pipe Laying | 21d | 2026-12-29 | 2027-01-21 | SDR-2-CON-RW-ZG-2260 FS+3d, SDR-2-CON-SE-ZA-1460, SDR-2-CON-SE-ZA-1520 | 19d |
|  | 3 | **Testing** |  | 2027-01-23 | 2027-02-15 |  |  |
| SDR-2-CON-SE-ZA-1480 |  | Testing of 200 mm GRP Pipe. | 21d | 2027-01-23 | 2027-02-15 | SDR-2-CON-ST-ZA-5100, SDR-2-CON-ST-ZA-1300, SDR-2-CON-RW-ZA-1050 FS+2d, SDR-2-CON-SE-ZA-1470, SDR-2-CON-ST-ZA-5550 | 19d |
|  | 6 | **Backfilling** |  | 2027-02-16 | 2027-03-17 |  |  |
| SDR-2-CON-SE-ZA-1530 |  | Backfilling of 200 mm GRP Pipe. | 21d | 2027-02-16 | 2027-03-17 | SDR-2-CON-SE-ZA-1480 | 19d |
|  | 4 | **Manholes** |  | 2026-10-06 | 2027-03-17 |  |  |
|  | 1 | **Excavation** |  | 2026-10-06 | 2026-11-26 |  |  |
| SDR-2-CON-SE-ZA-2490 |  | Excavation for manhole. Section 1 | 21d | 2026-10-06 | 2026-10-29 | SDR-2-CON-SE-ZA-2480 SS | 25d |
| SDR-2-CON-SE-ZA-1490 |  | Excavation for manhole. Section 2 | 21d | 2026-11-03 | 2026-11-26 | SDR-2-CON-RW-ZA-3420, SDR-2-CON-SE-ZA-2490 FS+3d | 25d |
|  | 2 | **bedding Works** |  | 2026-11-28 | 2026-12-21 |  |  |
| SDR-2-CON-SE-ZA-1550 |  | Sand bedding for manhole. | 21d | 2026-11-28 | 2026-12-21 | SDR-2-CON-SE-ZA-1490 | 25d |
|  | 3 | **Install Manholes** |  | 2026-12-22 | 2027-01-14 |  |  |
| SDR-2-CON-SE-ZA-1500 |  | Manhole Installation | 21d | 2026-12-22 | 2027-01-14 | SDR-2-CON-RW-ZG-2500, SDR-2-CON-SE-ZA-1490, SDR-2-CON-SE-ZA-1550 | 25d |
|  | 4 | **Testing** |  | 2027-01-23 | 2027-02-15 |  |  |
| SDR-2-CON-SE-ZA-1510 |  | Testing | 21d | 2027-01-23 | 2027-02-15 | SDR-2-CON-RW-ZG-1060 FS+3d, SDR-2-CON-SE-ZA-1500, SDR-2-CON-SE-ZA-1500 FF, SDR-2-CON-ST-ZA-5550, SDR-2-CON-ST-ZA-5400 | 19d |
|  | 5 | **Backfilling** |  | 2027-02-16 | 2027-03-17 |  |  |
| SDR-2-CON-SE-ZA-1540 |  | Backfilling | 21d | 2027-02-16 | 2027-03-17 | SDR-2-CON-SE-ZA-1510 | 19d |
|  | 5 | **LINE 4 AND LINE 5 ( PH2-A-MCD0 )** |  | 2026-10-10 | 2027-04-04 |  |  |
|  | 7 | **Pipes Work** |  | 2026-10-10 | 2027-03-15 |  |  |
|  | 1 | **Excavation** |  | 2026-10-10 | 2026-12-01 |  |  |
| SDR-2-CON-SE-ZA-2500 |  | Excavation for GRP Pipe 200mm Diameter Section 1 | 21d | 2026-10-10 | 2026-11-02 | SDR-2-CON-ST-ZA-4030 FS+10d, SDR-2-CON-ST-ZA-6190, SDR-2-CON-ST-ZA-6290 | 4d |
| SDR-2-CON-SE-ZA-1560 |  | Excavation for GRP Pipe 200mm Diameter Section 2 | 21d | 2026-11-08 | 2026-12-01 | SDR-2-CON-RW-ZG-2250, SDR-2-CON-SE-ZA-2500 FS+4d | 8d |
|  | 5 | **bedding Works** |  | 2026-12-02 | 2026-12-26 |  |  |
| SDR-2-CON-SE-ZA-1620 |  | Sand bedding for GRP Pipe 200mm Diameter | 21d | 2026-12-02 | 2026-12-26 | SDR-2-CON-SE-ZA-1560 | 21d |
|  | 2 | **Pipes Laying** |  | 2026-12-27 | 2027-01-19 |  |  |
| SDR-2-CON-SE-ZA-1570 |  | 200 mm GRP Pipe Laying | 21d | 2026-12-27 | 2027-01-19 | SDR-2-CON-SE-ZA-1560, SDR-2-CON-SE-ZA-1620 | 21d |
|  | 3 | **Testing** |  | 2027-01-20 | 2027-02-13 |  |  |
| SDR-2-CON-SE-ZA-1580 |  | Testing of 200 mm GRP Pipe. | 21d | 2027-01-20 | 2027-02-13 | SDR-2-CON-ST-ZA-4500, SDR-2-CON-SE-ZA-1570, SDR-2-CON-ST-ZA-6160 | 21d |
|  | 6 | **Backfilling** |  | 2027-02-14 | 2027-03-15 |  |  |
| SDR-2-CON-SE-ZA-1630 |  | Backfilling of 200 mm GRP Pipe. | 21d | 2027-02-14 | 2027-03-15 | SDR-2-CON-SE-ZA-1580 | 21d |
|  | 4 | **Manholes** |  | 2026-11-03 | 2027-04-04 |  |  |
|  | 1 | **Excavation** |  | 2026-11-03 | 2026-12-21 |  |  |
| SDR-2-CON-SE-ZA-2510 |  | Excavation for manhole. Section 1 | 21d | 2026-11-03 | 2026-11-26 | SDR-2-CON-SE-ZA-2500, SDR-2-CON-ST-ZA-3310 | 4d |

| ID | WBS | Task | Duration | Start | Finish | Predecessors | Total float |
| --- | --- | --- | --- | --- | --- | --- | --- |
| SDR-2-CON-SE-ZA-1590 |  | Excavation for manhole. Section 2 | 21d | 2026-11-28 | 2026-12-21 | SDR-2-CON-SE-ZA-2510 | 4d |
|  | 2 | **bedding Works** |  | 2026-12-22 | 2027-01-14 |  |  |
| SDR-2-CON-SE-ZA-1650 |  | Sand bedding for manhole. | 21d | 2026-12-22 | 2027-01-14 | SDR-2-CON-SE-ZA-1590 | 4d |
|  | 3 | **Install Manholes** |  | 2027-01-16 | 2027-02-08 |  |  |
| SDR-2-CON-SE-ZA-1600 |  | Manhole Installation | 21d | 2027-01-16 | 2027-02-08 | SDR-2-CON-ST-ZA-4500, SDR-2-CON-SE-ZA-1590, SDR-2-CON-SE-ZA-1650, SDR-2-CON-ST-ZA-6160 | 4d |
|  | 4 | **Testing** |  | 2027-02-09 | 2027-03-06 |  |  |
| SDR-2-CON-SE-ZA-1610 |  | Testing | 21d | 2027-02-09 | 2027-03-06 | SDR-2-CON-SE-ZA-1600 | 4d |
|  | 5 | **Backfilling** |  | 2027-03-07 | 2027-04-04 |  |  |
| SDR-2-CON-SE-ZA-2690 |  | Backfilling | 21d | 2027-03-07 | 2027-04-04 | SDR-2-CON-SE-ZA-1610, SDR-2-CON-ST-ZA-3350 | 4d |
|  | 6 | **LINE 6 AND LINE 7 ( PH2-A-MCE0 )** |  | 2026-10-21 | 2027-04-05 |  |  |
|  | 7 | **Pipes Work** |  | 2026-10-21 | 2027-04-05 |  |  |
|  | 1 | **Excavation** |  | 2026-10-21 | 2026-12-12 |  |  |
| SDR-2-CON-SE-ZA-2520 |  | Excavation for GRP Pipe 200mm Diameter Section 1 | 21d | 2026-10-21 | 2026-11-14 | SDR-2-CON-ST-ZA-4180 FS+6d | 12d |
| SDR-2-CON-SE-ZA-1660 |  | Excavation for GRP Pipe 200mm Diameter Section 2 | 21d | 2026-11-18 | 2026-12-12 | SDR-2-CON-ST-ZA-3310, SDR-2-CON-SE-ZA-2520 FS+3d | 12d |
|  | 5 | **bedding Works** |  | 2026-12-13 | 2027-01-05 |  |  |
| SDR-2-CON-SE-ZA-1720 |  | Sand bedding for GRP Pipe 200mm Diameter | 21d | 2026-12-13 | 2027-01-05 | SDR-2-CON-SE-ZA-1660 | 19d |
|  | 2 | **Pipes Laying** |  | 2027-01-17 | 2027-02-09 |  |  |
| SDR-2-CON-SE-ZA-1670 |  | 200 mm GRP Pipe Laying | 21d | 2027-01-17 | 2027-02-09 | SDR-2-CON-RW-ZA-2850, SDR-2-CON-SE-ZA-1660, SDR-2-CON-SE-ZA-1720 | 10d |
|  | 3 | **Testing** |  | 2027-02-10 | 2027-03-07 |  |  |
| SDR-2-CON-SE-ZA-1680 |  | Testing of 200 mm GRP Pipe. | 21d | 2027-02-10 | 2027-03-07 | SDR-2-CON-ST-ZA-4580, SDR-2-CON-SE-ZA-1670 | 10d |
|  | 6 | **Backfilling** |  | 2027-03-08 | 2027-04-05 |  |  |
| SDR-2-CON-SE-ZA-1730 |  | Backfilling of 200 mm GRP Pipe. | 21d | 2027-03-08 | 2027-04-05 | SDR-2-CON-SE-ZA-1680 | 10d |
|  | 4 | **Manholes** |  | 2026-10-21 | 2027-03-28 |  |  |
|  | 1 | **Excavation** |  | 2026-10-21 | 2026-12-08 |  |  |
| SDR-2-CON-SE-ZA-2530 |  | Excavation for manhole. Section 1 | 21d | 2026-10-21 | 2026-11-14 | SDR-2-CON-SE-ZA-2520 SS | 17d |
| SDR-2-CON-SE-ZA-1690 |  | Excavation for manhole.Section 2 | 21d | 2026-11-15 | 2026-12-08 | SDR-2-CON-SE-ZA-2530 | 17d |
|  | 2 | **bedding Works** |  | 2026-12-09 | 2027-01-02 |  |  |
| SDR-2-CON-SE-ZA-1750 |  | Sand bedding for manhole. | 21d | 2026-12-09 | 2027-01-02 | SDR-2-CON-SE-ZA-1690 | 17d |
|  | 3 | **Install Manholes** |  | 2027-01-03 | 2027-01-26 |  |  |
| SDR-2-CON-SE-ZA-1700 |  | Manhole Installation | 21d | 2027-01-03 | 2027-01-26 | SDR-2-CON-SE-ZA-1690, SDR-2-CON-SE-ZA-1750 | 17d |
|  | 4 | **Testing** |  | 2027-01-27 | 2027-02-20 |  |  |
| SDR-2-CON-SE-ZA-1710 |  | Testing | 21d | 2027-01-27 | 2027-02-20 | SDR-2-CON-ST-ZA-1300, SDR-2-CON-RW-ZA-2370, SDR-2-CON-SE-ZA-1700, SDR-2-CON-SE-ZA-1700 FF | 17d |
|  | 5 | **Backfilling** |  | 2027-02-28 | 2027-03-28 |  |  |
| SDR-2-CON-SE-ZA-1740 |  | Backfilling | 21d | 2027-02-28 | 2027-03-28 | SDR-2-CON-SE-ZA-1710 FS+5d | 17d |
|  | 7 | **LINE 8 AND LINE 9 ( PH2-A-MCF0 )** |  | 2026-10-14 | 2027-03-27 |  |  |
|  | 7 | **Pipes Work** |  | 2026-10-14 | 2027-03-27 |  |  |
|  | 1 | **Excavation** |  | 2026-10-14 | 2026-12-13 |  |  |
| SDR-2-CON-SE-ZA-2540 |  | Excavation for GRP Pipe 200mm Diameter Section 1 | 21d | 2026-10-14 | 2026-11-07 | SDR-2-CON-ST-ZA-4330 | 15d |
| SDR-2-CON-SE-ZA-1760 |  | Excavation for GRP Pipe 200mm Diameter Section 2 | 21d | 2026-11-19 | 2026-12-13 | SDR-2-CON-RW-ZA-2480, SDR-2-CON-SE-ZA-2540 FS+3d | 8d |
|  | 5 | **bedding Works** |  | 2026-12-14 | 2027-01-06 |  |  |
| SDR-2-CON-SE-ZA-1820 |  | Sand bedding for GRP Pipe 200mm Diameter | 21d | 2026-12-14 | 2027-01-06 | SDR-2-CON-RW-ZG-1950, SDR-2-CON-SE-ZA-1760 | 11d |
|  | 2 | **Pipes Laying** |  | 2027-01-07 | 2027-01-31 |  |  |
| SDR-2-CON-SE-ZA-1770 |  | 200 mm GRP Pipe Laying | 21d | 2027-01-07 | 2027-01-31 | SDR-2-CON-RW-ZG-2500, SDR-2-CON-SE-ZA-1760, SDR-2-CON-SE-ZA-1820 | 11d |
|  | 3 | **Testing** |  | 2027-02-01 | 2027-02-25 |  |  |
| SDR-2-CON-SE-ZA-1780 |  | Testing of 200 mm GRP Pipe. | 21d | 2027-02-01 | 2027-02-25 | SDR-2-CON-SE-ZA-1770 | 11d |
|  | 6 | **Backfilling** |  | 2027-02-27 | 2027-03-27 |  |  |
| SDR-2-CON-SE-ZA-1830 |  | Backfilling of 200 mm GRP Pipe. | 21d | 2027-02-27 | 2027-03-27 | SDR-2-CON-SE-ZA-1780 | 11d |
|  | 4 | **Manholes** |  | 2026-10-14 | 2027-03-25 |  |  |
|  | 1 | **Excavation** |  | 2026-10-14 | 2026-12-05 |  |  |
| SDR-2-CON-SE-ZA-2550 |  | Excavation for manhole. Section 1 | 21d | 2026-10-14 | 2026-11-07 | SDR-2-CON-SE-ZA-2540 SS | 19d |
| SDR-2-CON-SE-ZA-1790 |  | Excavation for manhole. Section 2 | 21d | 2026-11-11 | 2026-12-05 | SDR-2-CON-RW-ZA-3410, SDR-2-CON-SE-ZA-2550 FS+3d | 19d |
|  | 2 | **bedding Works** |  | 2026-12-06 | 2026-12-29 |  |  |
| SDR-2-CON-SE-ZA-1850 |  | Sand bedding for manhole. | 21d | 2026-12-06 | 2026-12-29 | SDR-2-CON-SE-ZA-1790 | 19d |
|  | 3 | **Install Manholes** |  | 2026-12-30 | 2027-01-23 |  |  |
| SDR-2-CON-SE-ZA-1800 |  | Manhole Installation | 21d | 2026-12-30 | 2027-01-23 | SDR-2-CON-SE-ZA-1790, SDR-2-CON-SE-ZA-1850 | 19d |
|  | 4 | **Testing** |  | 2027-01-24 | 2027-02-16 |  |  |
| SDR-2-CON-SE-ZA-1810 |  | Testing | 21d | 2027-01-24 | 2027-02-16 | SDR-2-CON-SE-ZA-1800, SDR-2-CON-SE-ZA-1800 FF | 19d |
|  | 5 | **Backfilling** |  | 2027-03-01 | 2027-03-25 |  |  |
| SDR-2-CON-SE-ZA-1840 |  | Backfilling | 18d | 2027-03-01 | 2027-03-25 | SDR-2-CON-SE-ZA-1810 FS+9d | 19d |
|  | 8 | **LINE 10 AND LINE 11 ( PH2-A-MCG0 )** |  | 2026-10-01 | 2027-03-17 |  |  |
|  | 7 | **Pipes Work** |  | 2026-10-01 | 2027-03-17 |  |  |
|  | 1 | **Excavation** |  | 2026-10-01 | 2026-11-22 |  |  |
| SDR-2-CON-SE-ZA-2560 |  | Excavation for GRP Pipe 200mm Diameter Section 1 | 21d | 2026-10-01 | 2026-10-25 | SDR-2-CON-ST-ZA-6190, SDR-2-CON-ST-ZA-4480 FS+5d | 17d |
| SDR-2-CON-SE-ZA-1860 |  | Excavation for GRP Pipe 200mm Diameter Section 2 | 21d | 2026-10-29 | 2026-11-22 | SDR-2-CON-SE-ZA-2560 FS+3d | 17d |
|  | 5 | **bedding Works** |  | 2026-11-23 | 2026-12-16 |  |  |
| SDR-2-CON-SE-ZA-1920 |  | Sand bedding for GRP Pipe 200mm Diameter | 21d | 2026-11-23 | 2026-12-16 | SDR-2-CON-RW-ZG-1950, SDR-2-CON-SE-ZA-1860 | 19d |
|  | 2 | **Pipes Laying** |  | 2026-12-17 | 2027-01-10 |  |  |
| SDR-2-CON-SE-ZA-1870 |  | 200 mm GRP Pipe Laying | 21d | 2026-12-17 | 2027-01-10 | SDR-2-CON-SE-ZA-1860, SDR-2-CON-SE-ZA-1920 | 19d |
|  | 3 | **Testing** |  | 2027-01-23 | 2027-02-15 |  |  |
| SDR-2-CON-SE-ZA-1880 |  | Testing of 200 mm GRP Pipe. | 21d | 2027-01-23 | 2027-02-15 | SDR-2-CON-ST-ZA-6160, SDR-2-CON-RW-ZA-2740, SDR-2-CON-SE-ZA-1870 | 9d |

| ID | WBS | Task | Duration | Start | Finish | Predecessors | Total float |
| --- | --- | --- | --- | --- | --- | --- | --- |
|  | 6 | **Backfilling** |  | 2027-02-16 | 2027-03-17 |  |  |
| SDR-2-CON-SE-ZA-1930 |  | Backfilling of 200 mm GRP Pipe. | 21d | 2027-02-16 | 2027-03-17 | SDR-2-CON-SE-ZA-1880 | 9d |
|  | 4 | **Manholes** |  | 2026-10-01 | 2027-03-14 |  |  |
|  | 1 | **Excavation** |  | 2026-10-01 | 2026-11-18 |  |  |
| SDR-2-CON-SE-ZA-2570 |  | Excavation for manhole. Section 1 | 21d | 2026-10-01 | 2026-10-25 | SDR-2-CON-SE-ZA-2560 SS | 21d |
| SDR-2-CON-SE-ZA-1890 |  | Excavation for manhole. Section 2 | 21d | 2026-10-26 | 2026-11-18 | SDR-2-CON-SE-ZA-2570 | 21d |
|  | 2 | **bedding Works** |  | 2026-11-19 | 2026-12-13 |  |  |
| SDR-2-CON-SE-ZA-1950 |  | Sand bedding for manhole. | 21d | 2026-11-19 | 2026-12-13 | SDR-2-CON-SE-ZA-1890 | 21d |
|  | 3 | **Install Manholes** |  | 2026-12-14 | 2027-01-06 |  |  |
| SDR-2-CON-SE-ZA-1900 |  | Manhole Installation | 21d | 2026-12-14 | 2027-01-06 | SDR-2-CON-SE-ZA-1890, SDR-2-CON-SE-ZA-1950 | 21d |
|  | 4 | **Testing** |  | 2027-01-07 | 2027-01-31 |  |  |
| SDR-2-CON-SE-ZA-1910 |  | Testing | 21d | 2027-01-07 | 2027-01-31 | SDR-2-CON-ST-ZA-6160, SDR-2-CON-SE-ZA-1900, SDR-2-CON-SE-ZA-1900 FF | 21d |
|  | 5 | **Backfilling** |  | 2027-02-13 | 2027-03-14 |  |  |
| SDR-2-CON-SE-ZA-1940 |  | Backfilling | 21d | 2027-02-13 | 2027-03-14 | SDR-2-CON-SE-ZA-1910 FS+10d | 21d |
|  | 9 | **LINE 12 AND LINE 13 ( PH2-A-MCH0 )** |  | 2026-10-07 | 2027-03-27 |  |  |
|  | 7 | **Pipes Work** |  | 2026-10-07 | 2027-03-07 |  |  |
|  | 1 | **Excavation** |  | 2026-10-07 | 2026-11-28 |  |  |
| SDR-2-CON-SE-ZA-2580 |  | Excavation for GRP Pipe 200mm Diameter Section 1 | 21d | 2026-10-07 | 2026-10-31 | SDR-2-CON-ST-ZA-4630 FS+10d | 7d |
| SDR-2-CON-SE-ZA-1960 |  | Excavation for GRP Pipe 200mm Diameter Section 2 | 21d | 2026-11-04 | 2026-11-28 | SDR-2-CON-RW-ZA-3420, SDR-2-CON-RW-ZA-1330, SDR-2-CON-RW-ZA-3410, SDR-2-CON-SE-ZA-2580 FS+3d | 7d |
|  | 5 | **bedding Works** |  | 2026-11-29 | 2026-12-22 |  |  |
| SDR-2-CON-SE-ZA-2020 |  | Sand bedding for GRP Pipe 200mm Diameter | 21d | 2026-11-29 | 2026-12-22 | SDR-2-CON-RW-ZA-2990, SDR-2-CON-SE-ZA-1960 | 7d |
|  | 2 | **Pipes Laying** |  | 2026-12-23 | 2027-01-16 |  |  |
| SDR-2-CON-SE-ZA-1970 |  | 200 mm GRP Pipe Laying | 21d | 2026-12-23 | 2027-01-16 | SDR-2-CON-RW-ZA-2950, SDR-2-CON-SE-ZA-1960, SDR-2-CON-SE-ZA-2020 | 7d |
|  | 3 | **Testing** |  | 2027-01-17 | 2027-02-09 |  |  |
| SDR-2-CON-SE-ZA-1980 |  | Testing of 200 mm GRP Pipe. | 21d | 2027-01-17 | 2027-02-09 | SDR-2-CON-RW-ZA-1200, SDR-2-CON-SE-ZA-1970 | 7d |
|  | 6 | **Backfilling** |  | 2027-02-10 | 2027-03-07 |  |  |
| SDR-2-CON-SE-ZA-2030 |  | Backfilling of 200 mm GRP Pipe. | 21d | 2027-02-10 | 2027-03-07 | SDR-2-CON-SE-ZA-1980 | 7d |
|  | 4 | **Manholes** |  | 2026-11-01 | 2027-03-27 |  |  |
|  | 1 | **Excavation** |  | 2026-11-01 | 2026-12-19 |  |  |
| SDR-2-CON-SE-ZA-2590 |  | Excavation for manhole. Section 1 | 21d | 2026-11-01 | 2026-11-24 | SDR-2-CON-SE-ZA-2580 | 18d |
| SDR-2-CON-SE-ZA-1990 |  | Excavation for manhole. Section 2 | 21d | 2026-11-25 | 2026-12-19 | SDR-2-CON-SE-ZA-2590 | 18d |
|  | 2 | **bedding Works** |  | 2026-12-20 | 2027-01-12 |  |  |
| SDR-2-CON-SE-ZA-2050 |  | Sand bedding for manhole. | 21d | 2026-12-20 | 2027-01-12 | SDR-2-CON-SE-ZA-1990 | 18d |
|  | 3 | **Install Manholes** |  | 2027-01-13 | 2027-02-06 |  |  |
| SDR-2-CON-SE-ZA-2000 |  | Manhole Installation | 21d | 2027-01-13 | 2027-02-06 | SDR-2-CON-SE-ZA-1990, SDR-2-CON-SE-ZA-2050 | 18d |
|  | 4 | **Testing** |  | 2027-02-07 | 2027-03-03 |  |  |
| SDR-2-CON-SE-ZA-2010 |  | Testing | 21d | 2027-02-07 | 2027-03-03 | SDR-2-CON-SE-ZA-2000, SDR-2-CON-SE-ZA-2000 FF | 18d |
|  | 5 | **Backfilling** |  | 2027-03-04 | 2027-03-27 |  |  |
| SDR-2-CON-SE-ZA-2040 |  | Backfilling | 16d | 2027-03-04 | 2027-03-27 | SDR-2-CON-SE-ZA-2010 | 18d |
|  | ZG | **ZONE G** |  | 2026-09-24 | 2027-03-25 |  |  |
|  | 3 | **LINE 49 AND LINE 51 ( PH2-G-MCE0 )** |  | 2026-10-14 | 2027-03-24 |  |  |
|  | 7 | **Pipes Work** |  | 2026-10-14 | 2027-03-15 |  |  |
|  | 1 | **Excavation** |  | 2026-10-14 | 2026-12-01 |  |  |
| SDR-2-CON-SE-ZA-2600 |  | Excavation for GRP Pipe 200mm Diameter Section 1 | 21d | 2026-10-14 | 2026-11-07 | SDR-2-CON-ST-ZA-5380 | 3d |
| SDR-2-CON-SE-ZA-2060 |  | Excavation for GRP Pipe 200mm Diameter Section 2 | 21d | 2026-11-08 | 2026-12-01 | SDR-2-CON-SE-ZA-2600 | 3d |
|  | 5 | **bedding Works** |  | 2026-12-02 | 2026-12-26 |  |  |
| SDR-2-CON-SE-ZA-2120 |  | Sand bedding for GRP Pipe 200mm Diameter | 21d | 2026-12-02 | 2026-12-26 | SDR-2-CON-SE-ZA-2060 | 18d |
|  | 2 | **Pipes Laying** |  | 2026-12-27 | 2027-01-19 |  |  |
| SDR-2-CON-SE-ZA-2070 |  | 200 mm GRP Pipe Laying | 21d | 2026-12-27 | 2027-01-19 | SDR-2-CON-RW-ZA-1340, SDR-2-CON-SE-ZA-2060, SDR-2-CON-SE-ZA-2120 | 18d |
|  | 3 | **Testing** |  | 2027-01-20 | 2027-02-13 |  |  |
| SDR-2-CON-SE-ZA-2080 |  | Testing of 200 mm GRP Pipe. | 21d | 2027-01-20 | 2027-02-13 | SDR-2-CON-ST-ZA-1300, SDR-2-CON-SE-ZA-2070 | 18d |
|  | 6 | **Backfilling** |  | 2027-02-14 | 2027-03-15 |  |  |
| SDR-2-CON-SE-ZA-2130 |  | Backfilling of 200 mm GRP Pipe. | 21d | 2027-02-14 | 2027-03-15 | SDR-2-CON-CC-ZG-1620, SDR-2-CON-SE-ZA-2080 | 18d |
|  | 4 | **Manholes** |  | 2026-10-14 | 2027-03-24 |  |  |
|  | 1 | **Excavation** |  | 2026-10-14 | 2026-12-05 |  |  |
| SDR-2-CON-SE-ZA-2610 |  | Excavation for manhole. Section 1 | 21d | 2026-10-14 | 2026-11-07 | SDR-2-CON-SE-ZA-2600 SS | 16d |
| SDR-2-CON-SE-ZA-2090 |  | Excavation for manhole. Section 2 | 21d | 2026-11-11 | 2026-12-05 | SDR-2-CON-SE-ZA-2610 FS+3d | 16d |
|  | 2 | **bedding Works** |  | 2026-12-06 | 2026-12-29 |  |  |
| SDR-2-CON-SE-ZA-2150 |  | Sand bedding for manhole. | 21d | 2026-12-06 | 2026-12-29 | SDR-2-CON-SE-ZA-2090 | 16d |
|  | 3 | **Install Manholes** |  | 2026-12-30 | 2027-01-23 |  |  |
| SDR-2-CON-SE-ZA-2100 |  | Manhole Installation | 21d | 2026-12-30 | 2027-01-23 | SDR-2-CON-SE-ZA-2090, SDR-2-CON-SE-ZA-2150 | 16d |
|  | 4 | **Testing** |  | 2027-01-24 | 2027-02-16 |  |  |
| SDR-2-CON-SE-ZA-2110 |  | Testing | 21d | 2027-01-24 | 2027-02-16 | SDR-2-CON-SE-ZA-2100, SDR-2-CON-SE-ZA-2100 FF | 16d |
|  | 5 | **Backfilling** |  | 2027-02-24 | 2027-03-24 |  |  |
| SDR-2-CON-SE-ZA-2140 |  | Backfilling | 21d | 2027-02-24 | 2027-03-24 | SDR-2-CON-SE-ZA-2110 FS+5d | 16d |
|  | 4 | **LINE 50 ( PH2-G-MCD0 )** |  | 2026-10-20 | 2027-03-25 |  |  |
|  | 7 | **Pipes Work** |  | 2026-10-20 | 2027-03-24 |  |  |
|  | 1 | **Excavation** |  | 2026-10-20 | 2026-12-10 |  |  |
| SDR-2-CON-SE-ZA-2620 |  | Excavation for GRP Pipe 200mm Diameter Section 1 | 21d | 2026-10-20 | 2026-11-12 | SDR-2-CON-ST-ZA-5380 FS+5d | 16d |
| SDR-2-CON-SE-ZA-2160 |  | Excavation for GRP Pipe 200mm Diameter Section 2 | 21d | 2026-11-17 | 2026-12-10 | SDR-2-CON-SE-ZA-2620 FS+3d | 16d |

| ID | WBS | Task | Duration | Start | Finish | Predecessors | Total float |
| --- | --- | --- | --- | --- | --- | --- | --- |
|  | 5 | **bedding Works** |  | 2026-12-12 | 2027-01-04 |  |  |
| SDR-2-CON-SE-ZA-2220 |  | Sand bedding for GRP Pipe 200mm Diameter | 21d | 2026-12-12 | 2027-01-04 | SDR-2-CON-SE-ZA-2160 | 16d |
|  | 2 | **Pipes Laying** |  | 2027-01-05 | 2027-01-28 |  |  |
| SDR-2-CON-SE-ZA-2170 |  | 200 mm GRP Pipe Laying | 21d | 2027-01-05 | 2027-01-28 | SDR-2-CON-ST-ZA-6160, SDR-2-CON-SE-ZA-2160, SDR-2-CON-SE-ZA-2220 | 16d |
|  | 3 | **Testing** |  | 2027-01-30 | 2027-02-23 |  |  |
| SDR-2-CON-SE-ZA-2180 |  | Testing of 200 mm GRP Pipe. | 21d | 2027-01-30 | 2027-02-23 | SDR-2-CON-SE-ZA-2170 | 16d |
|  | 6 | **Backfilling** |  | 2027-02-24 | 2027-03-24 |  |  |
| SDR-2-CON-SE-ZA-2230 |  | Backfilling of 200 mm GRP Pipe. | 21d | 2027-02-24 | 2027-03-24 | SDR-2-CON-SE-ZA-2180 | 16d |
|  | 4 | **Manholes** |  | 2026-10-20 | 2027-03-25 |  |  |
|  | 1 | **Excavation** |  | 2026-10-20 | 2026-12-10 |  |  |
| SDR-2-CON-SE-ZA-2630 |  | Excavation for manhole. Section 1 | 21d | 2026-10-20 | 2026-11-12 | SDR-2-CON-SE-ZA-2620 SS | 20d |
| SDR-2-CON-SE-ZA-2190 |  | Excavation for manhole. Section 2 | 21d | 2026-11-17 | 2026-12-10 | SDR-2-CON-SE-ZA-2630 FS+3d | 20d |
|  | 2 | **bedding Works** |  | 2026-12-12 | 2027-01-04 |  |  |
| SDR-2-CON-SE-ZA-2250 |  | Sand bedding for manhole. | 21d | 2026-12-12 | 2027-01-04 | SDR-2-CON-SE-ZA-2190 | 20d |
|  | 3 | **Install Manholes** |  | 2027-01-05 | 2027-01-28 |  |  |
| SDR-2-CON-SE-ZA-2200 |  | Manhole Installation | 21d | 2027-01-05 | 2027-01-28 | SDR-2-CON-SE-ZA-2190, SDR-2-CON-SE-ZA-2250 | 20d |
|  | 4 | **Testing** |  | 2027-01-30 | 2027-02-23 |  |  |
| SDR-2-CON-SE-ZA-2210 |  | Testing | 21d | 2027-01-30 | 2027-02-23 | SDR-2-CON-SE-ZA-2200, SDR-2-CON-SE-ZA-2200 FF | 20d |
|  | 5 | **Backfilling** |  | 2027-03-02 | 2027-03-25 |  |  |
| SDR-2-CON-SE-ZA-2240 |  | Backfilling | 17d | 2027-03-02 | 2027-03-25 | SDR-2-CON-SE-ZA-2210 FS+5d | 20d |
|  | 5 | **LINE 52 AND LINE 53 ( PH2-G-MCF0 )** |  | 2026-09-24 | 2027-02-25 |  |  |
|  | 7 | **Pipes Work** |  | 2026-09-24 | 2027-02-21 |  |  |
|  | 1 | **Excavation** |  | 2026-09-24 | 2026-11-15 |  |  |
| SDR-2-CON-SE-ZA-2640 |  | Excavation for GRP Pipe 200mm Diameter Section 1 | 21d | 2026-09-24 | 2026-10-18 | SDR-2-CON-ST-ZA-6290, SDR-2-CON-ST-ZA-5530 | 13d |
| SDR-2-CON-SE-ZA-2260 |  | Excavation for GRP Pipe 200mm Diameter Section 2 | 21d | 2026-10-22 | 2026-11-15 | SDR-2-CON-SE-ZA-2640 FS+3d | 13d |
|  | 5 | **bedding Works** |  | 2026-11-16 | 2026-12-09 |  |  |
| SDR-2-CON-SE-ZA-2320 |  | Sand bedding for GRP Pipe 200mm Diameter | 21d | 2026-11-16 | 2026-12-09 | SDR-2-CON-SE-ZA-2260 | 20d |
|  | 2 | **Pipes Laying** |  | 2026-12-10 | 2027-01-03 |  |  |
| SDR-2-CON-SE-ZA-2270 |  | 200 mm GRP Pipe Laying | 21d | 2026-12-10 | 2027-01-03 | SDR-2-CON-SE-ZA-2260, SDR-2-CON-SE-ZA-2320 | 20d |
|  | 3 | **Testing** |  | 2027-01-04 | 2027-01-27 |  |  |
| SDR-2-CON-SE-ZA-2280 |  | Testing of 200 mm GRP Pipe. | 21d | 2027-01-04 | 2027-01-27 | SDR-2-CON-SE-ZA-2270 | 20d |
|  | 6 | **Backfilling** |  | 2027-01-28 | 2027-02-21 |  |  |
| SDR-2-CON-SE-ZA-2330 |  | Backfilling of 200 mm GRP Pipe. | 21d | 2027-01-28 | 2027-02-21 | SDR-2-CON-SE-ZA-2280 | 20d |
|  | 4 | **Manholes** |  | 2026-09-24 | 2027-02-25 |  |  |
|  | 1 | **Excavation** |  | 2026-09-24 | 2026-11-15 |  |  |
| SDR-2-CON-SE-ZA-2650 |  | Excavation for manhole. Section 1 | 21d | 2026-09-24 | 2026-10-18 | SDR-2-CON-SE-ZA-2640 SS | 22d |
| SDR-2-CON-SE-ZA-2290 |  | Excavation for manhole. Section 2 | 21d | 2026-10-22 | 2026-11-15 | SDR-2-CON-SE-ZA-2650 FS+3d | 22d |
|  | 2 | **bedding Works** |  | 2026-11-16 | 2026-12-09 |  |  |
| SDR-2-CON-SE-ZA-2350 |  | Sand bedding for manhole. | 21d | 2026-11-16 | 2026-12-09 | SDR-2-CON-SE-ZA-2290 | 22d |
|  | 3 | **Install Manholes** |  | 2026-12-10 | 2027-01-03 |  |  |
| SDR-2-CON-SE-ZA-2300 |  | Manhole Installation | 21d | 2026-12-10 | 2027-01-03 | SDR-2-CON-SE-ZA-2290, SDR-2-CON-SE-ZA-2350 | 22d |
|  | 4 | **Testing** |  | 2027-01-04 | 2027-01-27 |  |  |
| SDR-2-CON-SE-ZA-2310 |  | Testing | 21d | 2027-01-04 | 2027-01-27 | SDR-2-CON-SE-ZA-2300, SDR-2-CON-SE-ZA-2300 FF | 22d |
|  | 5 | **Backfilling** |  | 2027-02-01 | 2027-02-25 |  |  |
| SDR-2-CON-SE-ZA-2340 |  | Backfilling | 21d | 2027-02-01 | 2027-02-25 | SDR-2-CON-SE-ZA-2310 FS+3d | 22d |
|  | 6 | **LINE 54 AND LINE 55 ( PH2-G-MCG0 )** |  | 2026-10-08 | 2027-03-23 |  |  |
|  | 7 | **Pipes Work** |  | 2026-10-08 | 2027-03-14 |  |  |
|  | 1 | **Excavation** |  | 2026-10-08 | 2026-11-29 |  |  |
| SDR-2-CON-SE-ZA-2660 |  | Excavation for GRP Pipe 200mm Diameter Section 1 | 21d | 2026-10-08 | 2026-11-01 | SDR-2-CON-ST-ZA-5980 | 0d |
| SDR-2-CON-SE-ZA-2360 |  | Excavation for GRP Pipe 200mm Diameter Section 2 | 21d | 2026-11-05 | 2026-11-29 | SDR-2-CON-SE-ZA-2660 FS+3d | 0d |
|  | 5 | **bedding Works** |  | 2026-11-30 | 2026-12-23 |  |  |
| SDR-2-CON-SE-ZA-2420 |  | Sand bedding for GRP Pipe 200mm Diameter | 21d | 2026-11-30 | 2026-12-23 | SDR-2-CON-SE-ZA-2360 | 15d |
|  | 2 | **Pipes Laying** |  | 2026-12-24 | 2027-01-17 |  |  |
| SDR-2-CON-SE-ZA-2370 |  | 200 mm GRP Pipe Laying | 21d | 2026-12-24 | 2027-01-17 | SDR-2-CON-RW-ZG-1360, SDR-2-CON-SE-ZA-2360, SDR-2-CON-SE-ZA-2420 | 15d |
|  | 3 | **Testing** |  | 2027-01-19 | 2027-02-11 |  |  |
| SDR-2-CON-SE-ZA-2380 |  | Testing of 200 mm GRP Pipe. | 21d | 2027-01-19 | 2027-02-11 | SDR-2-CON-RW-ZG-1060, SDR-2-CON-SE-ZA-2370 | 14d |
|  | 6 | **Backfilling** |  | 2027-02-13 | 2027-03-14 |  |  |
| SDR-2-CON-SE-ZA-2430 |  | Backfilling of 200 mm GRP Pipe. | 21d | 2027-02-13 | 2027-03-14 | SDR-2-CON-SE-ZA-2380 | 14d |
|  | 4 | **Manholes** |  | 2026-10-08 | 2027-03-23 |  |  |
|  | 1 | **Excavation** |  | 2026-10-08 | 2026-11-29 |  |  |
| SDR-2-CON-SE-ZA-2670 |  | Excavation for manhole. Section 1 | 21d | 2026-10-08 | 2026-11-01 | SDR-2-CON-SE-ZA-2660 SS | 17d |
| SDR-2-CON-SE-ZA-2390 |  | Excavation for manhole. Section 2 | 21d | 2026-11-05 | 2026-11-29 | SDR-2-CON-RW-ZG-1200, SDR-2-CON-SE-ZA-2670 FS+3d | 17d |
|  | 2 | **bedding Works** |  | 2026-11-30 | 2026-12-23 |  |  |
| SDR-2-CON-SE-ZA-2450 |  | Sand bedding for manhole. | 21d | 2026-11-30 | 2026-12-23 | SDR-2-CON-SE-ZA-2390 | 17d |
|  | 3 | **Install Manholes** |  | 2026-12-24 | 2027-01-17 |  |  |
| SDR-2-CON-SE-ZA-2400 |  | Manhole Installation | 21d | 2026-12-24 | 2027-01-17 | SDR-2-CON-SE-ZA-2390, SDR-2-CON-SE-ZA-2450 | 17d |
|  | 4 | **Testing** |  | 2027-01-18 | 2027-02-10 |  |  |
| SDR-2-CON-SE-ZA-2410 |  | Testing | 21d | 2027-01-18 | 2027-02-10 | SDR-2-CON-SE-ZA-2400, SDR-2-CON-SE-ZA-2400 FF | 17d |
|  | 5 | **Backfilling** |  | 2027-02-23 | 2027-03-23 |  |  |
| SDR-2-CON-SE-ZA-2440 |  | Backfilling | 21d | 2027-02-23 | 2027-03-23 | SDR-2-CON-SE-ZA-2410 FS+9d | 17d |

| ID | WBS | Task | Duration | Start | Finish | Predecessors | Total float |
| --- | --- | --- | --- | --- | --- | --- | --- |
|  | TSE | **TSE Network** |  | 2026-11-16 | 2027-05-24 |  |  |
|  | ZA | **ZONE A** |  | 2026-11-19 | 2027-05-04 |  |  |
|  | 1 | **TSE NETWORK IN ( PH2-COL-MC10 )** |  | 2026-11-19 | 2027-04-24 |  |  |
|  | 6 | **Pipes Work** |  | 2026-11-19 | 2027-04-15 |  |  |
|  | 1 | **Excavation** |  | 2026-11-19 | 2027-01-05 |  |  |
| SDR-2-CON-TS-ZA-3200 |  | Excavation for TSE HDPE Pipes 225 mm Section 1 | 20d | 2026-11-19 | 2026-12-12 | SDR-2-CON-RW-ZG-1390, SDR-2-CON-RW-ZA-2350, SDR-2-PRO-ST-M-1010, SDR-2-PRO-ST-E-1060, SDR-2-CON-SE-ZA-1000 | 1d |
| SDR-2-CON-TS-ZA-1000 |  | Excavation for TSE HDPE Pipes 225 mm Section 2 | 20d | 2026-12-14 | 2027-01-05 | SDR-2-CON-CC-ZG-1650, SDR-2-CON-RW-ZG-2300, SDR-2-CON-RW-ZG-1110, SDR-2-CON-TS-ZA-3200 FS+1d | 1d |
|  | 6 | **bedding Works** |  | 2027-01-11 | 2027-02-03 |  |  |
| SDR-2-CON-TS-ZA-1900 |  | Sand bedding for TSE HDPE Pipes 225 mm | 21d | 2027-01-11 | 2027-02-03 | SDR-2-CON-RW-ZG-1210 FS+4d, SDR-2-CON-TS-ZA-1000 FS+4d | 18d |
|  | 2 | **Pipes Laying** |  | 2027-02-04 | 2027-03-01 |  |  |
| SDR-2-CON-TS-ZA-1010 |  | Install TSE 225 mm HDPE Pipe | 21d | 2027-02-04 | 2027-03-01 | SDR-2-CON-ST-ZA-4200, SDR-2-CON-CC-ZA-1820, SDR-2-CON-TS-ZA-1000, SDR-2-PRO-MAL-M-1010, SDR-2-CON-TS-ZA-1900 | 18d |
|  | 5 | **Testing** |  | 2027-03-02 | 2027-03-22 |  |  |
| SDR-2-CON-TS-ZA-1080 |  | Testing of TSE HDPE Pipe 225 mm. | 14d | 2027-03-02 | 2027-03-22 | SDR-2-CON-CC-ZG-1620, SDR-2-CON-TS-ZA-1010 | 18d |
|  | 7 | **Backfilling** |  | 2027-03-23 | 2027-04-15 |  |  |
| SDR-2-CON-TS-ZA-1910 |  | Backfilling of TSE HDPE Pipe 225 mm. | 21d | 2027-03-23 | 2027-04-15 | SDR-2-CON-TS-ZA-1080 | 18d |
|  | 3 | **Valve Chambers & Valves** |  | 2026-11-26 | 2027-04-24 |  |  |
|  | 3 | **Excavation** |  | 2026-11-26 | 2027-01-11 |  |  |
| SDR-2-CON-TS-ZA-3210 |  | Excavation for Valve Chambers Section 1 | 20d | 2026-11-26 | 2026-12-19 | SDR-2-CON-RW-ZA-3490, SDR-2-CON-RW-ZA-2350, SDR-2-CON-TS-ZA-3200 SS | 17d |
| SDR-2-CON-TS-ZA-1040 |  | Excavation for Valve Chambers Section 2 | 20d | 2026-12-20 | 2027-01-11 | SDR-2-CON-TS-ZA-3210 | 17d |
|  | 1 | **bedding Works** |  | 2027-01-19 | 2027-02-11 |  |  |
| SDR-2-CON-TS-ZA-1020 |  | Sand bedding for Valve Chambers | 21d | 2027-01-19 | 2027-02-11 | SDR-2-CON-TE-ZA-1840, SDR-2-CON-RW-ZG-1060, SDR-2-PRO-MAL-M-1020, SDR-2-CON-TS-ZA-1040 | 11d |
|  | 4 | **Install Chambers & Valves** |  | 2027-02-13 | 2027-03-14 |  |  |
| SDR-2-CON-TS-ZA-1050 |  | Valve Chambers & Valves Installation | 21d | 2027-02-13 | 2027-03-14 | SDR-2-CON-TS-ZA-1040, SDR-2-CON-TS-ZA-1020 | 11d |
|  | 5 | **Testing** |  | 2027-03-15 | 2027-03-30 |  |  |
| SDR-2-CON-TS-ZA-1060 |  | Testing Chambers & Valves Installation | 14d | 2027-03-15 | 2027-03-30 | SDR-2-MILS-1060, SDR-2-CON-TS-ZA-1050 | 11d |
|  | 6 | **Backfilling** |  | 2027-03-31 | 2027-04-24 |  |  |
| SDR-2-CON-TS-ZA-1070 |  | Backfilling Chambers & Valves Installation | 21d | 2027-03-31 | 2027-04-24 | SDR-2-CON-TS-ZA-1060 | 11d |
|  | 2 | **TSE NETWORK IN ( PH2-COL-MC20 )** |  | 2026-12-01 | 2027-04-14 |  |  |
|  | 6 | **Pipes Work** |  | 2026-12-01 | 2027-04-13 |  |  |
|  | 1 | **Excavation** |  | 2026-12-01 | 2027-01-16 |  |  |
| SDR-2-CON-TS-ZA-3220 |  | Excavation for TSE HDPE Pipes 225 mm Section 1 | 20d | 2026-12-01 | 2026-12-23 | SDR-2-CON-CC-ZG-1610, SDR-2-CON-RW-ZA-3490, SDR-2-CON-SE-ZA-1460 | 20d |
| SDR-2-CON-TS-ZA-2200 |  | Excavation for TSE HDPE Pipes 225 mm Section 2 | 20d | 2026-12-24 | 2027-01-16 | SDR-2-CON-TS-ZA-3220 | 20d |
|  | 6 | **bedding Works** |  | 2027-01-17 | 2027-02-09 |  |  |
| SDR-2-CON-TS-ZA-2280 |  | Sand bedding for TSE HDPE Pipes 225 mm | 21d | 2027-01-17 | 2027-02-09 | SDR-2-CON-RW-ZA-2370, SDR-2-CON-TS-ZA-2200 | 20d |
|  | 2 | **Pipes Laying** |  | 2027-02-10 | 2027-03-07 |  |  |
| SDR-2-CON-TS-ZA-2210 |  | Install TSE 225 mm HDPE Pipe | 21d | 2027-02-10 | 2027-03-07 | SDR-2-CON-TS-ZA-2200, SDR-2-CON-TS-ZA-2280 | 20d |
|  | 5 | **Testing** |  | 2027-03-08 | 2027-03-23 |  |  |
| SDR-2-CON-TS-ZA-2270 |  | Testing of TSE HDPE Pipe 225 mm. | 10d | 2027-03-08 | 2027-03-23 | SDR-2-CON-TS-ZA-2210 | 20d |
|  | 7 | **Backfilling** |  | 2027-03-24 | 2027-04-13 |  |  |
| SDR-2-CON-TS-ZA-2290 |  | Backfilling of TSE HDPE Pipe 225 mm. | 18d | 2027-03-24 | 2027-04-13 | SDR-2-CON-TS-ZA-2270 | 20d |
|  | 3 | **Valve Chambers & Valves** |  | 2026-12-01 | 2027-04-14 |  |  |
|  | 3 | **Excavation** |  | 2026-12-01 | 2027-01-16 |  |  |
| SDR-2-CON-TS-ZA-3230 |  | Excavation for Valve Chambers Section 1 | 20d | 2026-12-01 | 2026-12-23 | SDR-2-CON-RW-ZA-3490, SDR-2-CON-TS-ZA-3220 SS | 20d |
| SDR-2-CON-TS-ZA-2230 |  | Excavation for Valve Chambers Section 2 | 20d | 2026-12-24 | 2027-01-16 | SDR-2-CON-TS-ZA-3230 | 20d |
|  | 1 | **bedding Works** |  | 2027-01-18 | 2027-02-10 |  |  |
| SDR-2-CON-TS-ZA-2220 |  | Sand bedding for Valve Chambers | 21d | 2027-01-18 | 2027-02-10 | SDR-2-CON-ST-ZA-6000, SDR-2-CON-ST-ZA-5930, SDR-2-CON-ST-ZA-5850, SDR-2-CON-TS-ZA-2230 | 19d |
|  | 4 | **Install Chambers & Valves** |  | 2027-02-11 | 2027-03-08 |  |  |
| SDR-2-CON-TS-ZA-2240 |  | Valve Chambers & Valves Installation | 21d | 2027-02-11 | 2027-03-08 | SDR-2-CON-TS-ZA-2230, SDR-2-CON-TS-ZA-2220 | 19d |
|  | 5 | **Testing** |  | 2027-03-14 | 2027-03-24 |  |  |
| SDR-2-CON-TS-ZA-2250 |  | Testing Chambers & Valves Installation | 10d | 2027-03-14 | 2027-03-24 | SDR-2-CON-TS-ZA-2240 | 19d |
|  | 6 | **Backfilling** |  | 2027-03-25 | 2027-04-14 |  |  |
| SDR-2-CON-TS-ZA-2260 |  | Backfilling Chambers & Valves Installation | 18d | 2027-03-25 | 2027-04-14 | SDR-2-CON-TS-ZA-2250 | 19d |
|  | 3 | **TSE NETWORK IN ( PH2-A-MCC0 )** |  | 2026-12-02 | 2027-05-04 |  |  |
|  | 6 | **Pipes Work** |  | 2026-12-02 | 2027-05-04 |  |  |
|  | 1 | **Excavation** |  | 2026-12-02 | 2027-02-11 |  |  |
| SDR-2-CON-TS-ZA-3240 |  | Excavation for TSE HDPE Pipes 125 mm Section 1 | 21d | 2026-12-02 | 2026-12-26 | SDR-2-CON-SE-ZA-1460 FS+1d | 19d |
| SDR-2-CON-TS-ZA-1180 |  | Excavation for TSE HDPE Pipes 125 mm Section 2 | 21d | 2027-01-19 | 2027-02-11 | SDR-2-CON-RW-ZG-1060, SDR-2-CON-TS-ZA-3240 FS+3d | 2d |
|  | 3 | **bedding Works** |  | 2027-02-13 | 2027-03-14 |  |  |
| SDR-2-CON-TS-ZA-1920 |  | Sand bedding for TSE HDPE Pipes 125 mm | 21d | 2027-02-13 | 2027-03-14 | SDR-2-CON-TS-ZA-1180 | 2d |
|  | 2 | **Pipes Laying** |  | 2027-03-15 | 2027-04-07 |  |  |
| SDR-2-CON-TS-ZA-1190 |  | Install TSE 125 mm HDPE Pipe | 21d | 2027-03-15 | 2027-04-07 | SDR-2-CON-TS-ZA-1180, SDR-2-CON-TS-ZA-1920 | 2d |
|  | 5 | **Testing** |  | 2027-04-08 | 2027-04-19 |  |  |
| SDR-2-CON-TS-ZA-1260 |  | Testing of TSE HDPE Pipe 125 mm. | 10d | 2027-04-08 | 2027-04-19 | SDR-2-CON-TS-ZA-1190 | 2d |
|  | 4 | **Backfilling** |  | 2027-04-20 | 2027-05-04 |  |  |
| SDR-2-CON-TS-ZA-1930 |  | Backfilling of TSE HDPE Pipe 125 mm. | 13d | 2027-04-20 | 2027-05-04 | SDR-2-CON-TS-ZA-1260 | 2d |
|  | 3 | **Valve Chambers & Valves** |  | 2026-12-02 | 2027-04-14 |  |  |
|  | 3 | **Excavation** |  | 2026-12-02 | 2027-01-16 |  |  |
| SDR-2-CON-TS-ZA-3250 |  | Excavation for Valve Chambers Section 1 | 21d | 2026-12-02 | 2026-12-26 | SDR-2-CON-TS-ZA-3240 SS | 19.3d |
| SDR-2-CON-TS-ZA-2010 |  | Excavation for Valve Chambers Section 2 | 18d | 2026-12-27 | 2027-01-16 | SDR-2-CON-TS-ZA-3250 | 19.3d |
|  | 1 | **bedding Works** |  | 2027-01-17 | 2027-02-09 |  |  |

| ID | WBS | Task | Duration | Start | Finish | Predecessors | Total float |
| --- | --- | --- | --- | --- | --- | --- | --- |
| SDR-2-CON-TS-ZA-2000 |  | Sand bedding for Valve Chambers | 21d | 2027-01-17 | 2027-02-09 | SDR-2-CON-TS-ZA-2010 | 19.3d |
|  | 4 | **Install Chambers & Valves** |  | 2027-02-10 | 2027-03-07 |  |  |
| SDR-2-CON-TS-ZA-2020 |  | Valve Chambers & Valves Installation | 21d | 2027-02-10 | 2027-03-07 | SDR-2-TC-CCTV-1080, SDR-2-CON-TS-ZA-2010, SDR-2-CON-TS-ZA-2000 | 19.3d |
|  | 5 | **Testing** |  | 2027-03-08 | 2027-03-20 |  |  |
| SDR-2-CON-TS-ZA-2030 |  | Testing Chambers & Valves Installation | 7d | 2027-03-08 | 2027-03-20 | SDR-2-CON-TS-ZA-2020 | 19.3d |
|  | 6 | **Backfilling** |  | 2027-03-21 | 2027-04-14 |  |  |
| SDR-2-CON-TS-ZA-2040 |  | Backfilling Chambers & Valves Installation | 21d | 2027-03-21 | 2027-04-14 | SDR-2-CON-TS-ZA-2030 FS+0.7d | 19.3d |
|  | 4 | **TSE NETWORK IN ( PH2-A-MCD0 )** |  | 2026-12-02 | 2027-04-20 |  |  |
|  | 6 | **Pipes Work** |  | 2026-12-02 | 2027-04-20 |  |  |
|  | 1 | **Excavation** |  | 2026-12-02 | 2027-01-16 |  |  |
| SDR-2-CON-TS-ZA-3260 |  | Excavation for TSE HDPE Pipes 90 mm Section 1 | 20d | 2026-12-02 | 2026-12-24 | SDR-2-CON-SE-ZA-1560 | 8d |
| SDR-2-CON-TS-ZA-1270 |  | Excavation for TSE HDPE Pipes 90 mm Section 2 | 19d | 2026-12-26 | 2027-01-16 | SDR-2-CON-TS-ZA-3260 | 8d |
|  | 3 | **bedding Works** |  | 2027-01-17 | 2027-02-06 |  |  |
| SDR-2-CON-TS-ZA-1940 |  | Sand bedding for TSE HDPE Pipes 90 mm | 18d | 2027-01-17 | 2027-02-06 | SDR-2-CON-TS-ZA-1270 | 19d |
|  | 2 | **Pipes Laying** |  | 2027-02-07 | 2027-03-03 |  |  |
| SDR-2-CON-TS-ZA-1280 |  | Install TSE 90 mm HDPE Pipe | 21d | 2027-02-07 | 2027-03-03 | SDR-2-TC-CCTV-1080, SDR-2-CON-TS-ZA-1940 | 19d |
|  | 5 | **Testing** |  | 2027-03-15 | 2027-03-27 |  |  |
| SDR-2-CON-TS-ZA-1350 |  | Testing of TSE HDPE Pipe 90 mm. | 11d | 2027-03-15 | 2027-03-27 | SDR-2-CON-TS-ZA-1280, SDR-2-CON-SE-ZA-2430, SDR-2-CON-SE-ZA-2340, SDR-2-CON-SE-ZA-2330, SDR-2-CON-SE-ZA-2240 SS | 14d |
|  | 4 | **Backfilling** |  | 2027-03-28 | 2027-04-20 |  |  |
| SDR-2-CON-TS-ZA-1950 |  | Backfilling of TSE HDPE Pipe 90 mm. | 21d | 2027-03-28 | 2027-04-20 | SDR-2-CON-TS-ZA-1350 | 14d |
|  | 3 | **Valve Chambers & Valves** |  | 2026-12-02 | 2027-04-13 |  |  |
|  | 3 | **Excavation** |  | 2026-12-02 | 2027-01-16 |  |  |
| SDR-2-CON-TS-ZA-3270 |  | Excavation for Valve Chambers Section 1 | 20d | 2026-12-02 | 2026-12-24 | SDR-2-CON-TS-ZA-3260 SS | 20d |
| SDR-2-CON-TS-ZA-2060 |  | Excavation for Valve Chambers Section 2 | 19d | 2026-12-26 | 2027-01-16 | SDR-2-CON-TS-ZA-3270 | 20d |
|  | 1 | **bedding Works** |  | 2027-01-17 | 2027-02-03 |  |  |
| SDR-2-CON-TS-ZA-2050 |  | Sand bedding for Valve Chambers | 16d | 2027-01-17 | 2027-02-03 | SDR-2-CON-TS-ZA-2060 | 20d |
|  | 4 | **Install Chambers & Valves** |  | 2027-02-04 | 2027-03-01 |  |  |
| SDR-2-CON-TS-ZA-2070 |  | Valve Chambers & Valves Installation | 21d | 2027-02-04 | 2027-03-01 | SDR-2-TC-CCTV-1080, SDR-2-CON-TS-ZA-2060, SDR-2-CON-TS-ZA-2050 | 20d |
|  | 5 | **Testing** |  | 2027-03-02 | 2027-03-22 |  |  |
| SDR-2-CON-TS-ZA-2080 |  | Testing Chambers & Valves Installation | 14d | 2027-03-02 | 2027-03-22 | SDR-2-CON-TS-ZA-2070, SDR-2-CON-SE-ZA-2340, SDR-2-CON-SE-ZA-2330, SDR-2-CON-SE-ZA-2240 SS | 20d |
|  | 6 | **Backfilling** |  | 2027-03-23 | 2027-04-13 |  |  |
| SDR-2-CON-TS-ZA-2090 |  | Backfilling Chambers & Valves Installation | 19d | 2027-03-23 | 2027-04-13 | SDR-2-CON-TS-ZA-2080 | 20d |
|  | 5 | **TSE NETWORK IN ( PH2-A-MCE0 )** |  | 2026-12-13 | 2027-04-22 |  |  |
|  | 6 | **Pipes Work** |  | 2026-12-13 | 2027-04-21 |  |  |
|  | 1 | **Excavation** |  | 2026-12-13 | 2027-01-27 |  |  |
| SDR-2-CON-TS-ZA-3280 |  | Excavation for TSE HDPE Pipes 90 mm Section 1 | 20d | 2026-12-13 | 2027-01-04 | SDR-2-CON-SE-ZA-1660 | 12d |
| SDR-2-CON-TS-ZA-2600 |  | Excavation for TSE HDPE Pipes 90 mm Section 2 | 20d | 2027-01-05 | 2027-01-27 | SDR-2-CON-TE-ZA-1840, SDR-2-CON-MV-ZA-1260, SDR-2-CON-TS-ZA-3280 | 13d |
|  | 3 | **bedding Works** |  | 2027-01-28 | 2027-02-18 |  |  |
| SDR-2-CON-TS-ZA-2630 |  | Sand bedding for TSE HDPE Pipes 90 mm | 19d | 2027-01-28 | 2027-02-18 | SDR-2-CON-TS-ZA-2600 | 13d |
|  | 2 | **Pipes Laying** |  | 2027-02-20 | 2027-03-17 |  |  |
| SDR-2-CON-TS-ZA-2610 |  | Install TSE 90 mm HDPE Pipe | 18d | 2027-02-20 | 2027-03-17 | SDR-2-CON-TS-ZA-2630 | 13d |
|  | 5 | **Testing** |  | 2027-03-18 | 2027-03-29 |  |  |
| SDR-2-CON-TS-ZA-2620 |  | Testing of TSE HDPE Pipe 90 mm. | 10d | 2027-03-18 | 2027-03-29 | SDR-2-CON-TS-ZA-2610 | 13d |
|  | 4 | **Backfilling** |  | 2027-03-30 | 2027-04-21 |  |  |
| SDR-2-CON-TS-ZA-2640 |  | Backfilling of TSE HDPE Pipe 90 mm. | 20d | 2027-03-30 | 2027-04-21 | SDR-2-CON-TS-ZA-2620 | 13d |
|  | 3 | **Valve Chambers & Valves** |  | 2026-12-13 | 2027-04-22 |  |  |
|  | 3 | **Excavation** |  | 2026-12-13 | 2027-01-27 |  |  |
| SDR-2-CON-TS-ZA-3290 |  | Excavation for Valve Chambers Section 1 | 21d | 2026-12-13 | 2027-01-05 | SDR-2-CON-TS-ZA-3280 SS | 12d |
| SDR-2-CON-TS-ZA-2660 |  | Excavation for Valve Chambers Section 2 | 19d | 2027-01-06 | 2027-01-27 | SDR-2-CON-TS-ZA-3290 | 12d |
|  | 1 | **bedding Works** |  | 2027-01-28 | 2027-02-20 |  |  |
| SDR-2-CON-TS-ZA-2650 |  | Sand bedding for Valve Chambers | 20d | 2027-01-28 | 2027-02-20 | SDR-2-CON-TS-ZA-2660 | 12d |
|  | 4 | **Install Chambers & Valves** |  | 2027-02-21 | 2027-03-22 |  |  |
| SDR-2-CON-TS-ZA-2670 |  | Valve Chambers & Valves Installation | 21d | 2027-02-21 | 2027-03-22 | SDR-2-CON-TS-ZA-2660, SDR-2-CON-TS-ZA-2650 | 12d |
|  | 5 | **Testing** |  | 2027-03-23 | 2027-03-30 |  |  |
| SDR-2-CON-TS-ZA-2680 |  | Testing Chambers & Valves Installation | 7d | 2027-03-23 | 2027-03-30 | SDR-2-CON-TS-ZA-2670, SDR-2-CON-SE-ZA-2240 SS, SDR-2-CON-SE-ZA-2230 SS, SDR-2-CON-SE-ZA-2140 SS, SDR-2-CON-SE-ZA-2130 | 12d |
|  | 6 | **Backfilling** |  | 2027-03-31 | 2027-04-22 |  |  |
| SDR-2-CON-TS-ZA-2690 |  | Backfilling Chambers & Valves Installation | 20d | 2027-03-31 | 2027-04-22 | SDR-2-CON-TS-ZA-2680 | 12d |
|  | 6 | **TSE NETWORK IN ( PH2-A-MCF0 )** |  | 2026-12-14 | 2027-04-27 |  |  |
|  | 6 | **Pipes Work** |  | 2026-12-14 | 2027-04-27 |  |  |
|  | 1 | **Excavation** |  | 2026-12-14 | 2027-01-28 |  |  |
| SDR-2-CON-TS-ZA-3300 |  | Excavation for TSE HDPE Pipes 90 mm Section 1 | 20d | 2026-12-14 | 2027-01-05 | SDR-2-CON-SE-ZA-1760 | 8d |
| SDR-2-CON-TS-ZA-2700 |  | Excavation for TSE HDPE Pipes 90 mm Section 2 | 20d | 2027-01-06 | 2027-01-28 | SDR-2-CON-TS-ZA-3300 | 8d |
|  | 3 | **bedding Works** |  | 2027-01-30 | 2027-02-21 |  |  |
| SDR-2-CON-TS-ZA-2730 |  | Sand bedding for TSE HDPE Pipes 90 mm | 20d | 2027-01-30 | 2027-02-21 | SDR-2-CON-TS-ZA-2700 | 8d |
|  | 2 | **Pipes Laying** |  | 2027-02-23 | 2027-03-21 |  |  |
| SDR-2-CON-TS-ZA-2710 |  | Install TSE 90 mm HDPE Pipe | 19d | 2027-02-23 | 2027-03-21 | SDR-2-CON-TS-ZA-2730 | 8d |
|  | 5 | **Testing** |  | 2027-03-22 | 2027-04-03 |  |  |
| SDR-2-CON-TS-ZA-2720 |  | Testing of TSE HDPE Pipe 90 mm. | 11d | 2027-03-22 | 2027-04-03 | SDR-2-CON-TS-ZA-2710 | 8d |
|  | 4 | **Backfilling** |  | 2027-04-04 | 2027-04-27 |  |  |
| SDR-2-CON-TS-ZA-2740 |  | Backfilling of TSE HDPE Pipe 90 mm. | 21d | 2027-04-04 | 2027-04-27 | SDR-2-CON-TS-ZA-2720 | 8d |

| ID | WBS | Task | Duration | Start | Finish | Predecessors | Total float |
| --- | --- | --- | --- | --- | --- | --- | --- |
|  | 3 | **Valve Chambers & Valves** |  | 2026-12-14 | 2027-04-27 |  |  |
|  | 3 | **Excavation** |  | 2026-12-14 | 2027-01-28 |  |  |
| SDR-2-CON-TS-ZA-3310 |  | Excavation for Valve Chambers Section 1 | 20d | 2026-12-14 | 2027-01-05 | SDR-2-CON-TS-ZA-3300 SS | 8d |
| SDR-2-CON-TS-ZA-2760 |  | Excavation for Valve Chambers Section 2 | 20d | 2027-01-06 | 2027-01-28 | SDR-2-CON-MV-ZA-1260, SDR-2-CON-MV-ZA-1220, SDR-2-CON-TS-ZA-3310 | 8d |
|  | 1 | **bedding Works** |  | 2027-01-30 | 2027-02-18 |  |  |
| SDR-2-CON-TS-ZA-2750 |  | Sand bedding for Valve Chambers | 18d | 2027-01-30 | 2027-02-18 | SDR-2-CON-TS-ZA-2760 | 8d |
|  | 4 | **Install Chambers & Valves** |  | 2027-02-20 | 2027-03-21 |  |  |
| SDR-2-CON-TS-ZA-2770 |  | Valve Chambers & Valves Installation | 21d | 2027-02-20 | 2027-03-21 | SDR-2-CON-TS-ZA-2760, SDR-2-CON-TS-ZA-2750 | 8d |
|  | 5 | **Testing** |  | 2027-03-22 | 2027-04-03 |  |  |
| SDR-2-CON-TS-ZA-2780 |  | Testing Chambers & Valves Installation | 11d | 2027-03-22 | 2027-04-03 | SDR-2-CON-TS-ZA-2770 | 8d |
|  | 6 | **Backfilling** |  | 2027-04-04 | 2027-04-27 |  |  |
| SDR-2-CON-TS-ZA-2790 |  | Backfilling Chambers & Valves Installation | 21d | 2027-04-04 | 2027-04-27 | SDR-2-CON-TS-ZA-2780, SDR-2-CLO-AS-E-1010 | 8d |
|  | 7 | **TSE NETWORK IN ( PH2-A-MCG0 )** |  | 2026-11-23 | 2027-04-17 |  |  |
|  | 6 | **Pipes Work** |  | 2026-11-23 | 2027-04-06 |  |  |
|  | 1 | **Excavation** |  | 2026-11-23 | 2027-01-07 |  |  |
| SDR-2-CON-TS-ZA-3320 |  | Excavation for TSE HDPE Pipes 90 mm Section 1 | 20d | 2026-11-23 | 2026-12-15 | SDR-2-CON-SE-ZA-1860 | 17d |
| SDR-2-CON-TS-ZA-2800 |  | Excavation for TSE HDPE Pipes 90 mm Section 2 | 20d | 2026-12-16 | 2027-01-07 | SDR-2-CON-TS-ZA-3320 | 18d |
|  | 3 | **bedding Works** |  | 2027-01-09 | 2027-01-28 |  |  |
| SDR-2-CON-TS-ZA-2830 |  | Sand bedding for TSE HDPE Pipes 90 mm | 18d | 2027-01-09 | 2027-01-28 | SDR-2-CON-TS-ZA-2800 | 18d |
|  | 2 | **Pipes Laying** |  | 2027-01-30 | 2027-02-23 |  |  |
| SDR-2-CON-TS-ZA-2810 |  | Install TSE 90 mm HDPE Pipe | 21d | 2027-01-30 | 2027-02-23 | SDR-2-CON-TS-ZA-2830 | 18d |
|  | 5 | **Testing** |  | 2027-02-24 | 2027-03-15 |  |  |
| SDR-2-CON-TS-ZA-2820 |  | Testing of TSE HDPE Pipe 90 mm. | 13d | 2027-02-24 | 2027-03-15 | SDR-2-CON-TS-ZA-2810 | 18d |
|  | 4 | **Backfilling** |  | 2027-03-16 | 2027-04-06 |  |  |
| SDR-2-CON-TS-ZA-2840 |  | Backfilling of TSE HDPE Pipe 90 mm. | 19d | 2027-03-16 | 2027-04-06 | SDR-2-CON-TS-ZA-2820 | 18d |
|  | 3 | **Valve Chambers & Valves** |  | 2026-11-23 | 2027-04-17 |  |  |
|  | 3 | **Excavation** |  | 2026-11-23 | 2027-01-07 |  |  |
| SDR-2-CON-TS-ZA-3330 |  | Excavation for Valve Chambers Section 1 | 20d | 2026-11-23 | 2026-12-15 | SDR-2-CON-TS-ZA-3320 SS | 17d |
| SDR-2-CON-TS-ZA-2860 |  | Excavation for Valve Chambers Section 2 | 20d | 2026-12-16 | 2027-01-07 | SDR-2-CON-TS-ZA-3330 | 17d |
|  | 1 | **bedding Works** |  | 2027-01-09 | 2027-01-30 |  |  |
| SDR-2-CON-TS-ZA-2850 |  | Sand bedding for Valve Chambers | 19d | 2027-01-09 | 2027-01-30 | SDR-2-CON-SL-ZA-2780, SDR-2-CON-TS-ZA-2860 | 17d |
|  | 4 | **Install Chambers & Valves** |  | 2027-01-31 | 2027-02-24 |  |  |
| SDR-2-CON-TS-ZA-2870 |  | Valve Chambers & Valves Installation | 21d | 2027-01-31 | 2027-02-24 | SDR-2-CON-TS-ZA-2860, SDR-2-CON-TS-ZA-2850 | 17d |
|  | 5 | **Testing** |  | 2027-02-25 | 2027-03-24 |  |  |
| SDR-2-CON-TS-ZA-2880 |  | Testing Chambers & Valves Installation | 20d | 2027-02-25 | 2027-03-24 | SDR-2-CON-TS-ZA-2870 | 17d |
|  | 6 | **Backfilling** |  | 2027-03-25 | 2027-04-17 |  |  |
| SDR-2-CON-TS-ZA-2890 |  | Backfilling Chambers & Valves Installation | 20d | 2027-03-25 | 2027-04-17 | SDR-2-CON-TS-ZA-2880 | 17d |
|  | 8 | **TSE NETWORK IN ( PH2-A-MCH0 )** |  | 2026-11-29 | 2027-04-19 |  |  |
|  | 6 | **Pipes Work** |  | 2026-11-29 | 2027-04-13 |  |  |
|  | 1 | **Excavation** |  | 2026-11-29 | 2027-01-13 |  |  |
| SDR-2-CON-TS-ZA-3340 |  | Excavation for TSE HDPE Pipes 250 mm Section 1 | 20d | 2026-11-29 | 2026-12-21 | SDR-2-CON-SL-ZA-2860, SDR-2-CON-SL-ZA-2840, SDR-2-CON-SE-ZA-1960 | 15d |
| SDR-2-CON-TS-ZA-1630 |  | Excavation for TSE HDPE Pipes 250 mm Section 2 | 20d | 2026-12-22 | 2027-01-13 | SDR-2-CON-MV-ZA-1220, SDR-2-CON-MV-ZA-1180, SDR-2-CON-SL-ZA-2820, SDR-2-CON-SL-ZA-2940, SDR-2-CON-TS-ZA-3340 | 15d |
|  | 7 | **bedding Works** |  | 2027-01-14 | 2027-02-07 |  |  |
| SDR-2-CON-TS-ZA-1960 |  | Sand bedding for TSE HDPE Pipes 250 mm | 21d | 2027-01-14 | 2027-02-07 | SDR-2-CON-SL-ZA-3210, SDR-2-CON-TS-ZA-1630 | 20d |
|  | 2 | **Pipes Laying** |  | 2027-02-08 | 2027-03-04 |  |  |
| SDR-2-CON-TS-ZA-1640 |  | Install TSE 250 mm HDPE Pipe | 21d | 2027-02-08 | 2027-03-04 | SDR-2-CON-TS-ZA-1630, SDR-2-CON-TS-ZA-1960 | 20d |
|  | 5 | **Testing** |  | 2027-03-06 | 2027-03-28 |  |  |
| SDR-2-CON-TS-ZA-1710 |  | Testing of TSE HDPE Pipe 250 mm. | 16d | 2027-03-06 | 2027-03-28 | SDR-2-CON-TS-ZA-1640 | 20d |
|  | 8 | **Backfilling** |  | 2027-03-29 | 2027-04-13 |  |  |
| SDR-2-CON-TS-ZA-1970 |  | Backfilling of TSE HDPE Pipe 250 mm. | 14d | 2027-03-29 | 2027-04-13 | SDR-2-CON-TS-ZA-1710, SDR-2-CON-TS-ZA-1960 FS+14d | 20d |
|  | 3 | **Valve Chambers & Valves** |  | 2026-11-29 | 2027-04-19 |  |  |
|  | 3 | **Excavation** |  | 2026-11-29 | 2027-01-13 |  |  |
| SDR-2-CON-TS-ZA-3350 |  | Excavation for Valve Chambers Section 1 | 20d | 2026-11-29 | 2026-12-21 | SDR-2-CON-TS-ZA-3340 SS | 15d |
| SDR-2-CON-TS-ZA-2110 |  | Excavation for Valve Chambers Section 2 | 20d | 2026-12-22 | 2027-01-13 | SDR-2-CON-TS-ZA-1630 SS, SDR-2-CON-TS-ZA-3350 | 15d |
|  | 1 | **bedding Works** |  | 2027-01-14 | 2027-02-07 |  |  |
| SDR-2-CON-TS-ZA-2100 |  | Sand bedding for Valve Chambers | 21d | 2027-01-14 | 2027-02-07 | SDR-2-CON-SL-ZA-3210, SDR-2-CON-TS-ZA-2110 | 15d |
|  | 4 | **Install Chambers & Valves** |  | 2027-02-08 | 2027-03-04 |  |  |
| SDR-2-CON-TS-ZA-2120 |  | Valve Chambers & Valves Installation | 21d | 2027-02-08 | 2027-03-04 | SDR-2-CON-TS-ZA-2110, SDR-2-CON-TS-ZA-2100 | 15d |
|  | 5 | **Testing** |  | 2027-03-06 | 2027-03-27 |  |  |
| SDR-2-CON-TS-ZA-2130 |  | Testing Chambers & Valves Installation | 15d | 2027-03-06 | 2027-03-27 | SDR-2-CON-TS-ZA-2120 | 15d |
|  | 6 | **Backfilling** |  | 2027-03-28 | 2027-04-19 |  |  |
| SDR-2-CON-TS-ZA-2140 |  | Backfilling Chambers & Valves Installation | 20d | 2027-03-28 | 2027-04-19 | SDR-2-CON-TS-ZA-2130 | 15d |
|  | 9 | **TSE NETWORK IN ( PH2-ART-MC00 )** |  | 2026-11-25 | 2027-04-15 |  |  |
|  | 6 | **Pipes Work** |  | 2026-11-25 | 2027-04-15 |  |  |
|  | 1 | **Excavation** |  | 2026-11-25 | 2027-01-10 |  |  |
| SDR-2-CON-TS-ZA-3360 |  | Excavation for TSE HDPE Pipes 450 mm Section 1 | 20d | 2026-11-25 | 2026-12-17 | SDR-2-CON-TS-ZA-3200 SS+5d | 18d |
| SDR-2-CON-TS-ZA-1720 |  | Excavation for TSE HDPE Pipes 450 mm Section 2 | 20d | 2026-12-19 | 2027-01-10 | SDR-2-CON-TS-ZA-3360 | 18d |
|  | 7 | **bedding Works** |  | 2027-01-11 | 2027-02-03 |  |  |
| SDR-2-CON-TS-ZA-1980 |  | Sand bedding for TSE HDPE Pipes 450 mm | 21d | 2027-01-11 | 2027-02-03 | SDR-2-CON-TS-ZA-1720 | 18d |
|  | 2 | **Pipes Laying** |  | 2027-02-04 | 2027-03-01 |  |  |

| ID | WBS | Task | Duration | Start | Finish | Predecessors | Total float |
| --- | --- | --- | --- | --- | --- | --- | --- |
| SDR-2-CON-TS-ZA-1730 |  | Install TSE 450 mm HDPE Pipe | 21d | 2027-02-04 | 2027-03-01 | SDR-2-CON-TS-ZA-1720, SDR-2-CON-TS-ZA-1980 | 18d |
|  | 5 | **Testing** |  | 2027-03-02 | 2027-03-23 |  |  |
| SDR-2-CON-TS-ZA-1800 |  | Testing of TSE HDPE Pipe 450 mm. | 15d | 2027-03-02 | 2027-03-23 | SDR-2-CON-TS-ZA-1730 | 18d |
|  | 8 | **Backfilling** |  | 2027-03-24 | 2027-04-15 |  |  |
| SDR-2-CON-TS-ZA-1990 |  | Backfilling of TSE HDPE Pipe 450 mm. | 20d | 2027-03-24 | 2027-04-15 | SDR-2-CON-TS-ZA-1800, SDR-2-CON-TS-ZA-1980 FS+12d | 18d |
|  | 3 | **Valve Chambers & Valves** |  | 2026-11-25 | 2027-04-15 |  |  |
|  | 3 | **Excavation** |  | 2026-11-25 | 2027-01-10 |  |  |
| SDR-2-CON-TS-ZA-3370 |  | Excavation for Valve Chambers Section 1 | 20d | 2026-11-25 | 2026-12-17 | SDR-2-CON-TS-ZA-3360 SS | 18d |
| SDR-2-CON-TS-ZA-2160 |  | Excavation for Valve Chambers Section 2 | 20d | 2026-12-19 | 2027-01-10 | SDR-2-CON-TS-ZA-3370 | 18d |
|  | 1 | **bedding Works** |  | 2027-01-11 | 2027-02-03 |  |  |
| SDR-2-CON-TS-ZA-2150 |  | Sand bedding for Valve Chambers | 21d | 2027-01-11 | 2027-02-03 | SDR-2-CON-TS-ZA-2160 | 18d |
|  | 4 | **Install Chambers & Valves** |  | 2027-02-04 | 2027-03-01 |  |  |
| SDR-2-CON-TS-ZA-2170 |  | Valve Chambers & Valves Installation | 21d | 2027-02-04 | 2027-03-01 | SDR-2-CON-TS-ZA-2160, SDR-2-CON-TS-ZA-2150 | 18d |
|  | 5 | **Testing** |  | 2027-03-02 | 2027-03-23 |  |  |
| SDR-2-CON-TS-ZA-2180 |  | Testing Chambers & Valves Installation | 15d | 2027-03-02 | 2027-03-23 | SDR-2-CLO-AS-E-1010, SDR-2-CON-TS-ZA-2170 | 18d |
|  | 6 | **Backfilling** |  | 2027-03-24 | 2027-04-15 |  |  |
| SDR-2-CON-TS-ZA-2190 |  | Backfilling Chambers & Valves Installation | 20d | 2027-03-24 | 2027-04-15 | SDR-2-CON-TS-ZA-2180 | 18d |
|  | 10 | **TSE NETWORK IN ( PH2-ART-MC10 )** |  | 2026-12-02 | 2027-04-18 |  |  |
|  | 6 | **Pipes Work** |  | 2026-12-02 | 2027-04-13 |  |  |
|  | 1 | **Excavation** |  | 2026-12-02 | 2027-01-18 |  |  |
| SDR-2-CON-TS-ZA-3380 |  | Excavation for TSE HDPE Pipes 450 mm Section 1 | 20d | 2026-12-02 | 2026-12-24 | SDR-2-CON-SE-ZA-1560 | 21d |
| SDR-2-CON-TS-ZA-3100 |  | Excavation for TSE HDPE Pipes 450 mm Section 2 | 19d | 2026-12-28 | 2027-01-18 | SDR-2-CON-SL-ZA-3170, SDR-2-CON-TS-ZA-3380 | 20d |
|  | 7 | **bedding Works** |  | 2027-01-19 | 2027-02-04 |  |  |
| SDR-2-CON-TS-ZA-3130 |  | Sand bedding for TSE HDPE Pipes 450 mm | 15d | 2027-01-19 | 2027-02-04 | SDR-2-CON-TS-ZA-3100 | 20d |
|  | 2 | **Pipes Laying** |  | 2027-02-06 | 2027-03-02 |  |  |
| SDR-2-CON-TS-ZA-3110 |  | Install TSE 450 mm HDPE Pipe | 21d | 2027-02-06 | 2027-03-02 | SDR-2-CON-TS-ZA-3100, SDR-2-CON-TS-ZA-3130 | 20d |
|  | 5 | **Testing** |  | 2027-03-03 | 2027-03-22 |  |  |
| SDR-2-CON-TS-ZA-3120 |  | Testing of TSE HDPE Pipe 450 mm. | 13d | 2027-03-03 | 2027-03-22 | SDR-2-CLO-AS-E-1010, SDR-2-CON-TS-ZA-3110 | 20d |
|  | 8 | **Backfilling** |  | 2027-03-23 | 2027-04-13 |  |  |
| SDR-2-CON-TS-ZA-3140 |  | Backfilling of TSE HDPE Pipe 450 mm. | 19d | 2027-03-23 | 2027-04-13 | SDR-2-CON-TS-ZA-3120 | 20d |
|  | 3 | **Valve Chambers & Valves** |  | 2026-12-02 | 2027-04-18 |  |  |
|  | 3 | **Excavation** |  | 2026-12-02 | 2027-01-21 |  |  |
| SDR-2-CON-TS-ZA-3390 |  | Excavation for Valve Chambers Section 1 | 20d | 2026-12-02 | 2026-12-24 | SDR-2-CON-TS-ZA-3380 SS | 21d |
| SDR-2-CON-TS-ZA-3160 |  | Excavation for Valve Chambers Section 2 | 19d | 2026-12-31 | 2027-01-21 | SDR-2-CON-ST-ZA-5550, SDR-2-CON-TS-ZA-3390 | 16d |
|  | 1 | **bedding Works** |  | 2027-01-23 | 2027-02-11 |  |  |
| SDR-2-CON-TS-ZA-3150 |  | Sand bedding for Valve Chambers | 18d | 2027-01-23 | 2027-02-11 | SDR-2-CON-TS-ZA-3160 | 16d |
|  | 4 | **Install Chambers & Valves** |  | 2027-02-13 | 2027-03-14 |  |  |
| SDR-2-CON-TS-ZA-3170 |  | Valve Chambers & Valves Installation | 21d | 2027-02-13 | 2027-03-14 | SDR-2-CON-TS-ZA-3160, SDR-2-CON-TS-ZA-3150 | 16d |
|  | 5 | **Testing** |  | 2027-03-15 | 2027-03-25 |  |  |
| SDR-2-CON-TS-ZA-3180 |  | Testing Chambers & Valves Installation | 10d | 2027-03-15 | 2027-03-25 | SDR-2-CON-TS-ZA-3170 | 16d |
|  | 6 | **Backfilling** |  | 2027-03-27 | 2027-04-18 |  |  |
| SDR-2-CON-TS-ZA-3190 |  | Backfilling Chambers & Valves Installation | 20d | 2027-03-27 | 2027-04-18 | SDR-2-CON-TS-ZA-3180 | 16d |
|  | ZG | **ZONE G** |  | 2026-11-16 | 2027-05-24 |  |  |
|  | 1 | **TSE NETWORK IN ( PH2-G-MCA0 )** |  | 2026-11-30 | 2027-04-20 |  |  |
|  | 6 | **Pipes Work** |  | 2026-11-30 | 2027-04-20 |  |  |
|  | 1 | **Excavation** |  | 2026-11-30 | 2027-01-17 |  |  |
| SDR-2-CON-TS-ZA-3400 |  | Excavation for TSE HDPE Pipes 225 mm Section 1 | 21d | 2026-11-30 | 2026-12-23 | SDR-2-CON-SE-ZA-2360 | 3d |
| SDR-2-CON-TS-ZA-2300 |  | Excavation for TSE HDPE Pipes 225 mm Section 2 | 21d | 2026-12-24 | 2027-01-17 | SDR-2-CON-TS-ZA-3400 | 3d |
|  | 6 | **bedding Works** |  | 2027-01-18 | 2027-02-10 |  |  |
| SDR-2-CON-TS-ZA-2380 |  | Sand bedding for TSE HDPE Pipes 225 mm | 21d | 2027-01-18 | 2027-02-10 | SDR-2-CON-TS-ZA-2300 | 14d |
|  | 2 | **Pipes Laying** |  | 2027-02-11 | 2027-03-08 |  |  |
| SDR-2-CON-TS-ZA-2310 |  | Install TSE 225 mm HDPE Pipe | 21d | 2027-02-11 | 2027-03-08 | SDR-2-CON-TS-ZA-2300, SDR-2-CON-TS-ZA-2380 | 14d |
|  | 5 | **Testing** |  | 2027-03-14 | 2027-03-28 |  |  |
| SDR-2-CON-TS-ZA-2370 |  | Testing of TSE HDPE Pipe 225 mm. | 13d | 2027-03-14 | 2027-03-28 | SDR-2-CON-TS-ZA-2310 | 14d |
|  | 7 | **Backfilling** |  | 2027-03-29 | 2027-04-20 |  |  |
| SDR-2-CON-TS-ZA-2390 |  | Backfilling of TSE HDPE Pipe 225 mm. | 20d | 2027-03-29 | 2027-04-20 | SDR-2-CON-TS-ZA-2370 | 14d |
|  | 3 | **Valve Chambers & Valves** |  | 2026-11-30 | 2027-04-19 |  |  |
|  | 3 | **Excavation** |  | 2026-11-30 | 2027-01-14 |  |  |
| SDR-2-CON-TS-ZA-3410 |  | Excavation for Valve Chambers Section 1 | 20d | 2026-11-30 | 2026-12-22 | SDR-2-CON-TS-ZA-3400 SS | 15d |
| SDR-2-CON-TS-ZA-2330 |  | Excavation for Valve Chambers Section 2 | 20d | 2026-12-23 | 2027-01-14 | SDR-2-CON-TS-ZA-3410 | 15d |
|  | 1 | **bedding Works** |  | 2027-01-16 | 2027-02-08 |  |  |
| SDR-2-CON-TS-ZA-2320 |  | Sand bedding for Valve Chambers | 21d | 2027-01-16 | 2027-02-08 | SDR-2-CON-ST-ZA-6080, SDR-2-CON-ST-ZA-5630, SDR-2-CON-ST-ZA-5550, SDR-2-CON-TS-ZA-2330 | 15d |
|  | 4 | **Install Chambers & Valves** |  | 2027-02-09 | 2027-03-06 |  |  |
| SDR-2-CON-TS-ZA-2340 |  | Valve Chambers & Valves Installation | 21d | 2027-02-09 | 2027-03-06 | SDR-2-CON-TS-ZA-2330, SDR-2-CON-TS-ZA-2320 | 15d |
|  | 5 | **Testing** |  | 2027-03-07 | 2027-03-25 |  |  |
| SDR-2-CON-TS-ZA-2350 |  | Testing Chambers & Valves Installation | 13d | 2027-03-07 | 2027-03-25 | SDR-2-CON-TS-ZA-2340 | 15d |
|  | 6 | **Backfilling** |  | 2027-03-28 | 2027-04-19 |  |  |
| SDR-2-CON-TS-ZA-2360 |  | Backfilling Chambers & Valves Installation | 20d | 2027-03-28 | 2027-04-19 | SDR-2-CON-TS-ZA-2350 FS+1d | 15d |
|  | 2 | **TSE NETWORK IN ( PH2-G-MCE0 )** |  | 2026-12-02 | 2027-04-20 |  |  |
|  | 6 | **Pipes Work** |  | 2026-12-02 | 2027-04-19 |  |  |

| ID | WBS | Task | Duration | Start | Finish | Predecessors | Total float |
| --- | --- | --- | --- | --- | --- | --- | --- |
|  | 1 | **Excavation** |  | 2026-12-02 | 2027-01-18 |  |  |
| SDR-2-CON-TS-ZA-3420 |  | Excavation for TSE HDPE Pipes 125 mm Section 1 | 21d | 2026-12-02 | 2026-12-26 | SDR-2-CON-SE-ZA-2060 | 3d |
| SDR-2-CON-TS-ZA-2400 |  | Excavation for TSE HDPE Pipes 125 mm Section 2 | 20d | 2026-12-27 | 2027-01-18 | SDR-2-CON-TS-ZA-3420 | 3d |
|  | 3 | **bedding Works** |  | 2027-01-19 | 2027-02-11 |  |  |
| SDR-2-CON-TS-ZA-2430 |  | Sand bedding for TSE HDPE Pipes 125 mm | 21d | 2027-01-19 | 2027-02-11 | SDR-2-CON-ST-ZA-6080, SDR-2-CON-TS-ZA-2400 | 15d |
|  | 2 | **Pipes Laying** |  | 2027-02-13 | 2027-03-14 |  |  |
| SDR-2-CON-TS-ZA-2410 |  | Install TSE 125 mm HDPE Pipe | 21d | 2027-02-13 | 2027-03-14 | SDR-2-CON-TS-ZA-2400, SDR-2-CON-TS-ZA-2430 | 15d |
|  | 5 | **Testing** |  | 2027-03-15 | 2027-03-25 |  |  |
| SDR-2-CON-TS-ZA-2420 |  | Testing of TSE HDPE Pipe 125 mm. | 10d | 2027-03-15 | 2027-03-25 | SDR-2-CON-TS-ZA-2410 | 15d |
|  | 4 | **Backfilling** |  | 2027-03-27 | 2027-04-19 |  |  |
| SDR-2-CON-TS-ZA-2440 |  | Backfilling of TSE HDPE Pipe 125 mm. | 21d | 2027-03-27 | 2027-04-19 | SDR-2-CON-TS-ZA-2420 | 15d |
|  | 3 | **Valve Chambers & Valves** |  | 2026-12-02 | 2027-04-20 |  |  |
|  | 3 | **Excavation** |  | 2026-12-02 | 2027-01-19 |  |  |
| SDR-2-CON-TS-ZA-3430 |  | Excavation for Valve Chambers Section 1 | 21d | 2026-12-02 | 2026-12-26 | SDR-2-CON-TS-ZA-3420 SS | 14d |
| SDR-2-CON-TS-ZA-2460 |  | Excavation for Valve Chambers Section 2 | 21d | 2026-12-27 | 2027-01-19 | SDR-2-CON-ST-ZA-4430, SDR-2-CON-TS-ZA-3430 | 14d |
|  | 1 | **bedding Works** |  | 2027-01-20 | 2027-02-13 |  |  |
| SDR-2-CON-TS-ZA-2450 |  | Sand bedding for Valve Chambers | 21d | 2027-01-20 | 2027-02-13 | SDR-2-CON-ST-ZA-6080, SDR-2-CON-TS-ZA-2460 | 14d |
|  | 4 | **Install Chambers & Valves** |  | 2027-02-14 | 2027-03-15 |  |  |
| SDR-2-CON-TS-ZA-2470 |  | Valve Chambers & Valves Installation | 21d | 2027-02-14 | 2027-03-15 | SDR-2-CON-TS-ZA-2530, SDR-2-CON-TS-ZA-2460, SDR-2-CON-TS-ZA-2450 | 14d |
|  | 5 | **Testing** |  | 2027-03-16 | 2027-03-25 |  |  |
| SDR-2-CON-TS-ZA-2480 |  | Testing Chambers & Valves Installation | 9d | 2027-03-16 | 2027-03-25 | SDR-2-CON-TS-ZA-2470 | 14d |
|  | 6 | **Backfilling** |  | 2027-03-28 | 2027-04-20 |  |  |
| SDR-2-CON-TS-ZA-2490 |  | Backfilling Chambers & Valves Installation | 21d | 2027-03-28 | 2027-04-20 | SDR-2-CON-TS-ZA-2480 FS+1d | 14d |
|  | 3 | **TSE NETWORK IN ( PH2-G-MCF0 )** |  | 2026-11-16 | 2027-04-14 |  |  |
|  | 6 | **Pipes Work** |  | 2026-11-16 | 2027-04-14 |  |  |
|  | 1 | **Excavation** |  | 2026-11-16 | 2027-01-02 |  |  |
| SDR-2-CON-TS-ZA-3440 |  | Excavation for TSE HDPE Pipes 90 mm Section 1 | 21d | 2026-11-16 | 2026-12-09 | SDR-2-PRO-ST-E-1200 FS+5d, SDR-2-CON-SE-ZA-2260 | 13d |
| SDR-2-CON-TS-ZA-2900 |  | Excavation for TSE HDPE Pipes 90 mm Section 2 | 20d | 2026-12-10 | 2027-01-02 | SDR-2-CON-SL-ZA-2820, SDR-2-CON-SL-ZA-2970, SDR-2-CON-TS-ZA-3440 | 13d |
|  | 3 | **bedding Works** |  | 2027-01-03 | 2027-01-26 |  |  |
| SDR-2-CON-TS-ZA-2930 |  | Sand bedding for TSE HDPE Pipes 90 mm | 21d | 2027-01-03 | 2027-01-26 | SDR-2-CON-ST-ZA-4430, SDR-2-CON-RW-ZG-2110, SDR-2-CON-SL-ZA-3130, SDR-2-CON-TS-ZA-2900 | 19d |
|  | 2 | **Pipes Laying** |  | 2027-01-27 | 2027-02-20 |  |  |
| SDR-2-CON-TS-ZA-2910 |  | Install TSE 90 mm HDPE Pipe | 21d | 2027-01-27 | 2027-02-20 | SDR-2-CON-ST-ZA-4350 FS+4d, SDR-2-CON-TS-ZA-2930 | 19d |
|  | 5 | **Testing** |  | 2027-02-21 | 2027-03-21 |  |  |
| SDR-2-CON-TS-ZA-2920 |  | Testing of TSE HDPE Pipe 90 mm. | 20d | 2027-02-21 | 2027-03-21 | SDR-2-CON-TS-ZA-2530, SDR-2-CON-TS-ZA-2910 | 19d |
|  | 4 | **Backfilling** |  | 2027-03-22 | 2027-04-14 |  |  |
| SDR-2-CON-TS-ZA-2940 |  | Backfilling of TSE HDPE Pipe 90 mm. | 21d | 2027-03-22 | 2027-04-14 | SDR-2-CON-TS-ZA-2920 | 19d |
|  | 3 | **Valve Chambers & Valves** |  | 2026-11-16 | 2027-04-12 |  |  |
|  | 3 | **Excavation** |  | 2026-11-16 | 2026-12-31 |  |  |
| SDR-2-CON-TS-ZA-3450 |  | Excavation for Valve Chambers Section 1 | 20d | 2026-11-16 | 2026-12-08 | SDR-2-CON-TS-ZA-3440 SS | 22d |
| SDR-2-CON-TS-ZA-2960 |  | Excavation for Valve Chambers Section 2 | 20d | 2026-12-09 | 2026-12-31 | SDR-2-CON-TS-ZA-3450 | 22d |
|  | 1 | **bedding Works** |  | 2027-01-02 | 2027-01-21 |  |  |
| SDR-2-CON-TS-ZA-2950 |  | Sand bedding for Valve Chambers | 18d | 2027-01-02 | 2027-01-21 | SDR-2-CON-ST-ZA-4430, SDR-2-CON-TS-ZA-2960 | 22d |
|  | 4 | **Install Chambers & Valves** |  | 2027-01-24 | 2027-02-16 |  |  |
| SDR-2-CON-TS-ZA-2970 |  | Valve Chambers & Valves Installation | 21d | 2027-01-24 | 2027-02-16 | SDR-2-CON-ST-ZA-4200 FS+3d, SDR-2-CON-TS-ZA-2960, SDR-2-CON-TS-ZA-2950 | 21d |
|  | 5 | **Testing** |  | 2027-02-17 | 2027-03-17 |  |  |
| SDR-2-CON-TS-ZA-2980 |  | Testing Chambers & Valves Installation | 20d | 2027-02-17 | 2027-03-17 | SDR-2-CON-TS-ZA-2970 | 21d |
|  | 6 | **Backfilling** |  | 2027-03-20 | 2027-04-12 |  |  |
| SDR-2-CON-TS-ZA-2990 |  | Backfilling Chambers & Valves Installation | 21d | 2027-03-20 | 2027-04-12 | SDR-2-CON-TS-ZA-2980 FS+1d | 21d |
|  | 4 | **TSE NETWORK IN ( PH2-G-MCG0 )** |  | 2026-11-30 | 2027-04-28 |  |  |
|  | 6 | **Pipes Work** |  | 2026-11-30 | 2027-04-19 |  |  |
|  | 1 | **Excavation** |  | 2026-11-30 | 2027-01-14 |  |  |
| SDR-2-CON-TS-ZA-3460 |  | Excavation for TSE HDPE Pipes 90 mm Section 1 | 20d | 2026-11-30 | 2026-12-22 | SDR-2-CON-SE-ZA-2360 | 8d |
| SDR-2-CON-TS-ZA-3000 |  | Excavation for TSE HDPE Pipes 90 mm Section 2 | 20d | 2026-12-23 | 2027-01-14 | SDR-2-CON-TS-ZA-3460 | 9d |
|  | 3 | **bedding Works** |  | 2027-01-16 | 2027-02-08 |  |  |
| SDR-2-CON-TS-ZA-3030 |  | Sand bedding for TSE HDPE Pipes 90 mm | 21d | 2027-01-16 | 2027-02-08 | SDR-2-CON-RW-ZG-2110, SDR-2-CON-TS-ZA-3000 | 15d |
|  | 2 | **Pipes Laying** |  | 2027-02-09 | 2027-03-06 |  |  |
| SDR-2-CON-TS-ZA-3010 |  | Install TSE 90 mm HDPE Pipe | 21d | 2027-02-09 | 2027-03-06 | SDR-2-CON-TS-ZA-3030 | 15d |
|  | 5 | **Testing** |  | 2027-03-07 | 2027-03-25 |  |  |
| SDR-2-CON-TS-ZA-3020 |  | Testing of TSE HDPE Pipe 90 mm. | 13d | 2027-03-07 | 2027-03-25 | SDR-2-CON-SE-ZA-2340, SDR-2-CON-SE-ZA-2330 FS+5d, SDR-2-CON-TS-ZA-3010 | 15d |
|  | 4 | **Backfilling** |  | 2027-03-27 | 2027-04-19 |  |  |
| SDR-2-CON-TS-ZA-3040 |  | Backfilling of TSE HDPE Pipe 90 mm. | 21d | 2027-03-27 | 2027-04-19 | SDR-2-CON-SE-ZA-2440, SDR-2-CON-SE-ZA-2230, SDR-2-CON-SE-ZA-2140, SDR-2-CON-TS-ZA-3020 | 15d |
|  | 3 | **Valve Chambers & Valves** |  | 2026-11-30 | 2027-04-28 |  |  |
|  | 3 | **Excavation** |  | 2026-11-30 | 2027-01-14 |  |  |
| SDR-2-CON-TS-ZA-3470 |  | Excavation for Valve Chambers Section 1 | 20d | 2026-11-30 | 2026-12-22 | SDR-2-CON-TS-ZA-3460 SS | 8d |
| SDR-2-CON-TS-ZA-3060 |  | Excavation for Valve Chambers Section 2 | 20d | 2026-12-23 | 2027-01-14 | SDR-2-CON-TS-ZA-3470 | 8d |
|  | 1 | **bedding Works** |  | 2027-01-16 | 2027-02-08 |  |  |
| SDR-2-CON-TS-ZA-3050 |  | Sand bedding for Valve Chambers | 21d | 2027-01-16 | 2027-02-08 | SDR-2-CON-ST-ZA-4880, SDR-2-CON-ST-ZA-4580, SDR-2-CON-ST-ZA-4500, SDR-2-CON-ST-ZA-4430, SDR-2-CON-TS-ZA-3060 | 8d |
|  | 4 | **Install Chambers & Valves** |  | 2027-02-09 | 2027-03-06 |  |  |
| SDR-2-CON-TS-ZA-3070 |  | Valve Chambers & Valves Installation | 21d | 2027-02-09 | 2027-03-06 | SDR-2-CON-ST-ZA-3350, SDR-2-CON-TS-ZA-3060, SDR-2-CON-TS-ZA-3050 | 8d |
|  | 5 | **Testing** |  | 2027-03-08 | 2027-04-03 |  |  |

| ID | WBS | Task | Duration | Start | Finish | Predecessors | Total float |
| --- | --- | --- | --- | --- | --- | --- | --- |
| SDR-2-CON-TS-ZA-3080 |  | Testing Chambers & Valves Installation | 19d | 2027-03-08 | 2027-04-03 | SDR-2-CON-SE-ZA-2030, SDR-2-CON-ST-ZA-5480, SDR-2-CON-TS-ZA-3070 | 7d |
|  | 6 | **Backfilling** |  | 2027-04-05 | 2027-04-28 |  |  |
| SDR-2-CON-TS-ZA-3090 |  | Backfilling Chambers & Valves Installation | 21d | 2027-04-05 | 2027-04-28 | SDR-2-CON-TS-ZA-3080 FS+1d | 7d |
|  | 5 | **TSE NETWORK IN ( PH2-G-MCZ0 )** |  | 2026-11-30 | 2027-05-24 |  |  |
|  | 6 | **Pipes Work** |  | 2026-11-30 | 2027-05-24 |  |  |
|  | 1 | **Excavation** |  | 2026-11-30 | 2027-01-16 |  |  |
| SDR-2-CON-TS-ZA-3480 |  | Excavation for TSE HDPE Pipes 125 mm Section 1 | 21d | 2026-11-30 | 2026-12-23 | SDR-2-CON-SE-ZA-2360 | 0d |
| SDR-2-CON-TS-ZA-2500 |  | Excavation for TSE HDPE Pipes 125 mm Section 2 | 20d | 2026-12-24 | 2027-01-16 | SDR-2-CON-RW-ZG-2540, SDR-2-CON-TS-ZA-3480 | 0d |
|  | 3 | **bedding Works** |  | 2027-01-17 | 2027-02-09 |  |  |
| SDR-2-CON-TS-ZA-2530 |  | Sand bedding for TSE HDPE Pipes 125 mm | 21d | 2027-01-17 | 2027-02-09 | SDR-2-CON-ST-ZA-4880, SDR-2-CON-ST-ZA-4580, SDR-2-CON-ST-ZA-4050 FS+2d, SDR-2-CON-ST-ZA-3760, SDR-2-CON-ST-ZA-1140, SDR-2-CON-RW-ZG-2110, SDR-2-CON-TS-ZA-2500 | 0d |
|  | 2 | **Pipes Laying** |  | 2027-03-01 | 2027-03-29 |  |  |
| SDR-2-CON-TS-ZA-2510 |  | Install TSE 125 mm HDPE Pipe | 21d | 2027-03-01 | 2027-03-29 | SDR-2-CON-TS-ZA-2500, SDR-2-CON-TS-ZA-2530, SDR-2-CLO-AS-E-1010 | 25d |
|  | 5 | **Testing** |  | 2027-04-13 | 2027-04-21 |  |  |
| SDR-2-CON-TS-ZA-2520 |  | Testing of TSE HDPE Pipe 125 mm. | 8d | 2027-04-13 | 2027-04-21 | SDR-2-CON-TS-ZA-2840, SDR-2-CON-ST-ZA-7040, SDR-2-CON-ST-ZA-7030, SDR-2-CON-ST-ZA-7020, SDR-2-CON-ST-ZA-7010, SDR-2-CON-ST-ZA-6940, SDR-2-CON-TS-ZA-2510 | 13d |
|  | 4 | **Backfilling** |  | 2027-04-28 | 2027-05-24 |  |  |
| SDR-2-CON-TS-ZA-2540 |  | Backfilling of TSE HDPE Pipe 125 mm. | 18d | 2027-04-28 | 2027-05-24 | SDR-2-TC-SN-1030 SS, SDR-2-TC-CW-1010, SDR-2-CON-PW-ZA-2320, SDR-2-CON-PW-ZA-2350, SDR-2-CON-PW-ZA-1070 SS, SDR-2-CON-PW-ZA-2210, SDR-2-CON-TS-ZA-2590, SDR-2-CON-TS-ZA-3090 SS, SDR-2-CON-TS-ZA-3040, SDR-2-CON-TS-ZA-2990, SDR-2-CON-TS-ZA-2940, SDR-2-CON-TS-ZA-2490, SDR-2-CON-TS-ZA-2440, SDR-2-CON-TS-ZA-2360, SDR-2-CON-TS-ZA-2390, SDR-2-CON-TS-ZA-3190, SDR-2-CON-TS-ZA-3140, SDR-2-CON-TS-ZA-2190, SDR-2-CON-TS-ZA-1990, SDR-2-CON-TS-ZA-2140, SDR-2-CON-TS-ZA-1970, SDR-2-CON-TS-ZA-2890, SDR-2-CON-TS-ZA-2840, SDR-2-CON-TS-ZA-2790, SDR-2-CON-TS-ZA-2740, SDR-2-CON-TS-ZA-2690 SS, SDR-2-CON-TS-ZA-2640, SDR-2-CON-TS-ZA-2090, SDR-2-CON-TS-ZA-1950, SDR-2-CON-TS-ZA-2040, SDR-2-CON-TS-ZA-1930 SS, SDR-2-CON-TS-ZA-1930 FF, SDR-2-CON-TS-ZA-2260, SDR-2-CON-TS-ZA-2290, SDR-2-CON-TS-ZA-1070, SDR-2-CON-TS-ZA-1910, SDR-2-CON-ST-ZA-6120 SS, SDR-2-CON-ST-ZA-5520 SS, SDR-2-CON-ST-ZA-5970 SS, SDR-2-CON-ST-ZA-5220 SS, SDR-2-CON-ST-ZA-5070 SS, SDR-2-CON-ST-ZA-4920 SS, SDR-2-CON-ST-ZA-4770, SDR-2-CON-ST-ZA-4620, SDR-2-CON-ST-ZA-4470, SDR-2-CON-ST-ZA-4320, SDR-2-CON-ST-ZA-4170, SDR-2-CON-ST-ZA-4020, SDR-2-CON-RW-ZG-2210, SDR-2-CON-RW-ZG-2060, SDR-2-CON-RW-ZG-1910, SDR-2-CON-RW-ZG-1760, SDR-2-CON-RW-ZG-1610, SDR-2-CON-RW-ZG-1460, SDR-2-CON-RW-ZG-1310, SDR-2-CON-RW-ZG-1160, SDR-2-CON-RW-ZA-2830, SDR-2-CON-RW-ZA-2690, SDR-2-CON-RW-ZA-2550, SDR-2-CON-RW-ZA-2410, SDR-2-CON-RW-ZA-2270, SDR-2-CON-RW-ZA-2130, SDR-2-CON-RW-ZA-1990, SDR-2-CON-RW-ZA-1850, SDR-2-CON-RW-ZA-1710, SDR-2-CON-RW-ZA-1570, SDR-2-CON-RW-ZA-1290, SDR-2-CON-RW-ZA-1150, SDR-2-CON-TS-ZA-2520 | 8d |
|  | 3 | **Valve Chambers & Valves** |  | 2026-11-30 | 2027-04-26 |  |  |
|  | 3 | **Excavation** |  | 2026-11-30 | 2027-01-14 |  |  |
| SDR-2-CON-TS-ZA-3490 |  | Excavation for Valve Chambers Section 1 | 20d | 2026-11-30 | 2026-12-22 | SDR-2-CON-TS-ZA-3480 SS | 15d |
| SDR-2-CON-TS-ZA-2560 |  | Excavation for Valve Chambers Section 2 | 20d | 2026-12-23 | 2027-01-14 | SDR-2-CON-TS-ZA-3490 | 15d |
|  | 1 | **bedding Works** |  | 2027-01-16 | 2027-02-08 |  |  |
| SDR-2-CON-TS-ZA-2550 |  | Sand bedding for Valve Chambers | 21d | 2027-01-16 | 2027-02-08 | SDR-2-CON-ST-ZA-5030, SDR-2-CON-ST-ZA-4950, SDR-2-CON-ST-ZA-4880, SDR-2-CON-ST-ZA-4800, SDR-2-CON-ST-ZA-4730, SDR-2-CON-TS-ZA-2560 | 15d |
|  | 4 | **Install Chambers & Valves** |  | 2027-02-09 | 2027-03-06 |  |  |
| SDR-2-CON-TS-ZA-2570 |  | Valve Chambers & Valves Installation | 21d | 2027-02-09 | 2027-03-06 | SDR-2-CON-TS-ZA-2560, SDR-2-CON-TS-ZA-2550 | 15d |
|  | 5 | **Testing** |  | 2027-03-18 | 2027-04-04 |  |  |
| SDR-2-CON-TS-ZA-2580 |  | Testing Chambers & Valves Installation | 15d | 2027-03-18 | 2027-04-04 | SDR-2-CON-SE-ZA-1930, SDR-2-CON-SE-ZA-1430, SDR-2-CON-TS-ZA-2570, SDR-2-CON-ST-ZA-3350 | 9d |
|  | 6 | **Backfilling** |  | 2027-04-07 | 2027-04-26 |  |  |
| SDR-2-CON-TS-ZA-2590 |  | Backfilling Chambers & Valves Installation | 17d | 2027-04-07 | 2027-04-26 | SDR-2-CON-SE-ZA-2040, SDR-2-CON-TS-ZA-2580 FS+2d | 9d |
|  | PW | **Portable Water** |  | 2026-12-14 | 2027-05-26 |  |  |
|  | ZA | **ZONE A** |  | 2026-12-14 | 2027-05-24 |  |  |
|  | 1 | **PORTABLE WATER IN ( PH2-COL-MC10 )** |  | 2026-12-14 | 2027-04-25 |  |  |
|  | 7 | **Pipes Work** |  | 2026-12-14 | 2027-04-25 |  |  |
|  | 1 | **Excavation** |  | 2026-12-14 | 2027-01-31 |  |  |
| SDR-2-CON-PW-ZA-3710 |  | Excavation for PW HDPE Pipes 315 mm Section 1 | 21d | 2026-12-14 | 2027-01-06 | SDR-2-CON-RW-ZG-2340, SDR-2-CON-TS-ZA-1000 SS | 1d |
| SDR-2-CON-PW-ZA-1000 |  | Excavation for PW HDPE Pipes 315 mm Section 2 | 21d | 2027-01-07 | 2027-01-31 | SDR-2-CON-ST-ZA-4730, SDR-2-CON-ST-ZA-4650, SDR-2-CON-RW-ZG-1360, SDR-2-CON-RW-ZA-1620, SDR-2-CON-SL-ZA-3490, SDR-2-CON-RW-ZG-1660, SDR-2-CON-PW-ZA-3710 | 16d |
|  | 8 | **bedding Works** |  | 2027-02-01 | 2027-02-23 |  |  |
| SDR-2-CON-PW-ZA-2200 |  | Sand bedding for PW HDPE Pipes 315 mm | 19d | 2027-02-01 | 2027-02-23 | SDR-2-CON-CC-ZA-1820, SDR-2-CON-PW-ZA-1000 | 16d |
|  | 2 | **Pipes Laying** |  | 2027-02-27 | 2027-03-23 |  |  |
| SDR-2-CON-PW-ZA-1010 |  | Install PW 315 mm HDPE Pipe | 18d | 2027-02-27 | 2027-03-23 | SDR-2-CON-SE-ZA-1440, SDR-2-CON-PW-ZA-2200, SDR-2-CON-ST-ZA-3350 | 14d |
|  | 5 | **Testing** |  | 2027-03-28 | 2027-04-04 |  |  |
| SDR-2-CON-PW-ZA-1080 |  | Testing of PW HDPE Pipe 315 mm. | 7d | 2027-03-28 | 2027-04-04 | SDR-2-CON-SE-ZA-1940, SDR-2-CON-SE-ZA-1830, SDR-2-CON-SE-ZA-1630, SDR-2-CON-SE-ZA-1540, SDR-2-CON-SE-ZA-1530, SDR-2-CON-PW-ZA-1010, SDR-2-CON-SE-ZA-2040 SS | 11d |
|  | 9 | **Backfilling** |  | 2027-04-06 | 2027-04-25 |  |  |
| SDR-2-CON-PW-ZA-2210 |  | Backfilling of PW HDPE Pipe 315 mm. | 17d | 2027-04-06 | 2027-04-25 | SDR-2-CON-SE-ZA-1840, SDR-2-CON-SE-ZA-1740, SDR-2-CON-SE-ZA-1730, SDR-2-CON-PW-ZA-1080 | 10d |
|  | 3 | **Valve Chambers & Valves & Fire Hydrant** |  | 2026-12-14 | 2027-04-20 |  |  |
|  | 3 | **Excavation** |  | 2026-12-14 | 2027-01-28 |  |  |
| SDR-2-CON-PW-ZA-3720 |  | Excavation for Valve Chambers Section 1 | 20d | 2026-12-14 | 2027-01-05 | SDR-2-CON-PW-ZA-3710 SS, SDR-2-CON-RW-ZG-2420, SDR-2-CON-RW-ZG-1390 | 14d |
| SDR-2-CON-PW-ZA-1040 |  | Excavation for Valve Chambers Section 2 | 20d | 2027-01-06 | 2027-01-28 | SDR-2-CON-PW-ZA-3720 | 14d |
|  | 1 | **bedding Works** |  | 2027-01-30 | 2027-02-16 |  |  |
| SDR-2-CON-PW-ZA-1020 |  | Sand bedding for Valve Chambers | 16d | 2027-01-30 | 2027-02-16 | SDR-2-CON-PW-ZA-1040 | 14d |
|  | 4 | **Install Chambers & Valves & Fire Hydrant** |  | 2027-02-17 | 2027-03-17 |  |  |
| SDR-2-CON-PW-ZA-1050 |  | Install Chambers & Valves | 20d | 2027-02-17 | 2027-03-17 | SDR-2-CON-PW-ZA-1020 | 14d |
|  | 2 | **Testing** |  | 2027-03-18 | 2027-03-27 |  |  |
| SDR-2-CON-PW-ZA-1030 |  | Testing for Chambers & Valves | 8d | 2027-03-18 | 2027-03-27 | SDR-2-CON-ST-ZA-6220, SDR-2-CON-PW-ZA-1050, SDR-2-CON-SE-ZA-2040 SS | 14d |
|  | 6 | **Backfilling** |  | 2027-03-28 | 2027-04-20 |  |  |
| SDR-2-CON-PW-ZA-1070 |  | Backfilling for Chambers & Valves | 21d | 2027-03-28 | 2027-04-20 | SDR-2-CON-RW-ZG-1760, SDR-2-CON-PW-ZA-1030 | 14d |
|  | 2 | **PORTABLE WATER IN ( PH2-COL-MC20 )** |  | 2026-12-20 | 2027-04-18 |  |  |
|  | 7 | **Pipes Work** |  | 2026-12-20 | 2027-04-17 |  |  |
|  | 1 | **Excavation** |  | 2026-12-20 | 2027-02-06 |  |  |
| SDR-2-CON-PW-ZA-3730 |  | Excavation for PW HDPE Pipes 315 mm Section 1 | 21d | 2026-12-20 | 2027-01-12 | SDR-2-CON-PW-ZA-3710 SS+5d | 1d |
| SDR-2-CON-PW-ZA-2260 |  | Excavation for PW HDPE Pipes 315 mm Section 2 | 21d | 2027-01-13 | 2027-02-06 | SDR-2-CON-ST-ZA-4130, SDR-2-CON-RW-ZG-1660, SDR-2-CON-RW-ZG-1510, SDR-2-CON-SL-ZA-3460, SDR-2-CON-ST-ZA-3350, SDR-2-CON-PW-ZA-3730 | 17d |
|  | 8 | **bedding Works** |  | 2027-02-07 | 2027-02-24 |  |  |
| SDR-2-CON-PW-ZA-2340 |  | Sand bedding for PW HDPE Pipes 315 mm | 15d | 2027-02-07 | 2027-02-24 | SDR-2-CON-PW-ZA-2260, SDR-2-CON-RW-ZA-1050 | 17d |
|  | 2 | **Pipes Laying** |  | 2027-02-25 | 2027-03-18 |  |  |
| SDR-2-CON-PW-ZA-2270 |  | Install PW 315 mm HDPE Pipe | 15d | 2027-02-25 | 2027-03-18 | SDR-2-CON-PW-ZA-2340 | 17d |
|  | 5 | **Testing** |  | 2027-03-20 | 2027-03-28 |  |  |
| SDR-2-CON-PW-ZA-2330 |  | Testing of PW HDPE Pipe 315 mm. | 8d | 2027-03-20 | 2027-03-28 | SDR-2-CON-SE-ZA-1940, SDR-2-CON-SE-ZA-1930, SDR-2-CON-PW-ZA-2270 | 17d |
|  | 9 | **Backfilling** |  | 2027-03-29 | 2027-04-17 |  |  |
| SDR-2-CON-PW-ZA-2350 |  | Backfilling of PW HDPE Pipe 315 mm. | 17d | 2027-03-29 | 2027-04-17 | SDR-2-CON-RW-ZG-1610, SDR-2-CON-RW-ZG-1460, SDR-2-CON-PW-ZA-2330 | 17d |
|  | 3 | **Valve Chambers & Valves & Fire Hydrant** |  | 2026-12-20 | 2027-04-18 |  |  |
|  | 3 | **Excavation** |  | 2026-12-20 | 2027-02-06 |  |  |

| ID | WBS | Task | Duration | Start | Finish | Predecessors | Total float |
| --- | --- | --- | --- | --- | --- | --- | --- |
| SDR-2-CON-PW-ZA-3740 |  | Excavation for Valve Chambers Section 1 | 21d | 2026-12-20 | 2027-01-12 | SDR-2-CON-RW-ZG-1660, SDR-2-CON-RW-ZG-1510, SDR-2-CON-PW-ZA-3730 SS | 16d |
| SDR-2-CON-PW-ZA-2300 |  | Excavation for Valve Chambers Section 2 | 21d | 2027-01-13 | 2027-02-06 | SDR-2-CON-PW-ZA-3740 | 16d |
|  | 1 | **bedding Works** |  | 2027-02-07 | 2027-02-24 |  |  |
| SDR-2-CON-PW-ZA-2280 |  | Sand bedding for Valve Chambers | 15d | 2027-02-07 | 2027-02-24 | SDR-2-CON-SL-ZA-3410, SDR-2-CON-PW-ZA-2300 | 16d |
|  | 4 | **Install Chambers & Valves & Fire Hydrant** |  | 2027-02-25 | 2027-03-18 |  |  |
| SDR-2-CON-PW-ZA-2310 |  | Install Chambers & Valves | 15d | 2027-02-25 | 2027-03-18 | SDR-2-CON-PW-ZA-2280 | 16d |
|  | 2 | **Testing** |  | 2027-03-20 | 2027-03-27 |  |  |
| SDR-2-CON-PW-ZA-2290 |  | Testing for Chambers & Valves | 7d | 2027-03-20 | 2027-03-27 | SDR-2-CON-PW-ZA-2310 | 16d |
|  | 6 | **Backfilling** |  | 2027-03-28 | 2027-04-18 |  |  |
| SDR-2-CON-PW-ZA-2320 |  | Backfilling for Chambers & Valves | 19d | 2027-03-28 | 2027-04-18 | SDR-2-CON-PW-ZA-2290 | 16d |
|  | 11 | **PORTABLE WATER IN ( PH2-A-MCA0 )** |  | 2026-12-23 | 2027-05-11 |  |  |
|  | 7 | **Pipes Work** |  | 2026-12-23 | 2027-05-02 |  |  |
|  | 1 | **Excavation** |  | 2026-12-23 | 2027-02-09 |  |  |
| SDR-2-CON-PW-ZA-3750 |  | Excavation for PW HDPE Pipe 225 mm. Section 1 | 21d | 2026-12-23 | 2027-01-16 | SDR-2-CON-PW-ZA-3730 SS+3d | 1d |
| SDR-2-CON-PW-ZA-1200 |  | Excavation for PW HDPE Pipe 225 mm. Section 2 | 21d | 2027-01-17 | 2027-02-09 | SDR-2-CON-ST-ZA-5180 FS+3d, SDR-2-CON-ST-ZA-5100 FS+2d, SDR-2-CON-PW-ZA-3750 | 5d |
|  | 3 | **bedding Works** |  | 2027-02-10 | 2027-03-06 |  |  |
| SDR-2-CON-PW-ZA-2220 |  | Sand bedding for PW HDPE Pipe 225 mm. | 20d | 2027-02-10 | 2027-03-06 | SDR-2-CON-PW-ZA-1200 | 5d |
|  | 2 | **Pipes Laying** |  | 2027-03-07 | 2027-03-30 |  |  |
| SDR-2-CON-PW-ZA-1210 |  | Install PW 225 mm HDPE Pipe | 17d | 2027-03-07 | 2027-03-30 | SDR-2-CON-PW-ZA-2220 | 5d |
|  | 5 | **Testing** |  | 2027-04-05 | 2027-04-12 |  |  |
| SDR-2-CON-PW-ZA-1280 |  | Testing of PW HDPE Pipe 225 mm. | 7d | 2027-04-05 | 2027-04-12 | SDR-2-CON-PW-ZA-1210 FS+3d, SDR-2-CON-SE-ZA-2690 | 4d |
|  | 4 | **Backfilling** |  | 2027-04-13 | 2027-05-02 |  |  |
| SDR-2-CON-PW-ZA-2230 |  | Backfilling of PW HDPE Pipe 225 mm. | 17d | 2027-04-13 | 2027-05-02 | SDR-2-CON-PW-ZA-1280 | 4d |
|  | 3 | **Valve Chambers & Valves & Fire Hydrant** |  | 2026-12-23 | 2027-05-11 |  |  |
|  | 3 | **Excavation** |  | 2026-12-23 | 2027-02-07 |  |  |
| SDR-2-CON-PW-ZA-3760 |  | Excavation for Valve Chambers Section 1 | 20d | 2026-12-23 | 2027-01-14 | SDR-2-CON-PW-ZA-3750 SS | 20d |
| SDR-2-CON-PW-ZA-2680 |  | Excavation for Valve Chambers Section 2 | 20d | 2027-01-16 | 2027-02-07 | SDR-2-CON-SL-ZA-3290, SDR-2-CON-PW-ZA-3760 | 20d |
|  | 1 | **bedding Works** |  | 2027-02-08 | 2027-03-03 |  |  |
| SDR-2-CON-PW-ZA-2660 |  | Sand bedding for Valve Chambers | 20d | 2027-02-08 | 2027-03-03 | SDR-2-CON-PW-ZA-2680 | 20d |
|  | 4 | **Install Chambers & Valves & Fire Hydrant** |  | 2027-03-04 | 2027-03-31 |  |  |
| SDR-2-CON-PW-ZA-2690 |  | Install Chambers & Valves | 20d | 2027-03-04 | 2027-03-31 | SDR-2-CON-PW-ZA-2660 | 20d |
|  | 2 | **Testing** |  | 2027-04-15 | 2027-04-24 |  |  |
| SDR-2-CON-PW-ZA-2670 |  | Testing for Chambers & Valves | 8d | 2027-04-15 | 2027-04-24 | SDR-2-CON-RW-ZG-1160, SDR-2-CON-PW-ZA-2690 FS+3d, SDR-2-CON-SE-ZA-2690 | 11d |
|  | 6 | **Backfilling** |  | 2027-04-25 | 2027-05-11 |  |  |
| SDR-2-CON-PW-ZA-2700 |  | Backfilling for Chambers & Valves | 15d | 2027-04-25 | 2027-05-11 | SDR-2-CON-PW-ZA-2670 | 11d |
|  | 12 | **PORTABLE WATER IN ( PH2-A-MCB0 )** |  | 2026-12-27 | 2027-05-03 |  |  |
|  | 7 | **Pipes Work** |  | 2026-12-27 | 2027-05-03 |  |  |
|  | 1 | **Excavation** |  | 2026-12-27 | 2027-02-14 |  |  |
| SDR-2-CON-PW-ZA-3770 |  | Excavation for PW HDPE Pipe 225 mm. Section 1 | 21d | 2026-12-27 | 2027-01-19 | SDR-2-CON-PW-ZA-3750 SS+3d | 1d |
| SDR-2-CON-PW-ZA-2710 |  | Excavation for PW HDPE Pipe 225 mm. Section 2 | 21d | 2027-01-21 | 2027-02-14 | SDR-2-CON-SL-ZA-3410, SDR-2-CON-SL-ZA-3370, SDR-2-CON-SL-ZA-3330, SDR-2-CON-PW-ZA-3770 | 0d |
|  | 3 | **bedding Works** |  | 2027-02-15 | 2027-03-16 |  |  |
| SDR-2-CON-PW-ZA-2740 |  | Sand bedding for PW HDPE Pipe 225 mm. | 21d | 2027-02-15 | 2027-03-16 | SDR-2-CON-PW-ZA-2710, SDR-2-CON-TS-ZA-2530 FS+4d | 0d |
|  | 2 | **Pipes Laying** |  | 2027-03-17 | 2027-04-08 |  |  |
| SDR-2-CON-PW-ZA-2720 |  | Install PW 225 mm HDPE Pipe | 20d | 2027-03-17 | 2027-04-08 | SDR-2-CON-PW-ZA-2740 | 0d |
|  | 5 | **Testing** |  | 2027-04-10 | 2027-04-18 |  |  |
| SDR-2-CON-PW-ZA-2730 |  | Testing of PW HDPE Pipe 225 mm. | 8d | 2027-04-10 | 2027-04-18 | SDR-2-CON-RW-ZA-2270, SDR-2-CON-RW-ZA-2130, SDR-2-CON-RW-ZA-1990, SDR-2-CON-RW-ZA-1850, SDR-2-CON-RW-ZA-1570, SDR-2-CON-RW-ZA-1430, SDR-2-CON-RW-ZA-1290, SDR-2-CON-RW-ZA-1150, SDR-2-CON-PW-ZA-2720 | 0d |
|  | 4 | **Backfilling** |  | 2027-04-19 | 2027-05-03 |  |  |
| SDR-2-CON-PW-ZA-2750 |  | Backfilling of PW HDPE Pipe 225 mm. | 13d | 2027-04-19 | 2027-05-03 | SDR-2-CON-PW-ZA-2730 | 0d |
|  | 3 | **Valve Chambers & Valves & Fire Hydrant** |  | 2026-12-27 | 2027-04-28 |  |  |
|  | 3 | **Excavation** |  | 2026-12-27 | 2027-02-13 |  |  |
| SDR-2-CON-PW-ZA-3780 |  | Excavation for Valve Chambers Section 1 | 21d | 2026-12-27 | 2027-01-19 | SDR-2-CON-PW-ZA-3770 SS | 4d |
| SDR-2-CON-PW-ZA-2780 |  | Excavation for Valve Chambers Section 2 | 21d | 2027-01-20 | 2027-02-13 | SDR-2-CON-PW-ZA-3780 | 4d |
|  | 1 | **bedding Works** |  | 2027-02-14 | 2027-03-14 |  |  |
| SDR-2-CON-PW-ZA-2760 |  | Sand bedding for Valve Chambers | 20d | 2027-02-14 | 2027-03-14 | SDR-2-CON-PW-ZA-2780 | 4d |
|  | 4 | **Install Chambers & Valves & Fire Hydrant** |  | 2027-03-15 | 2027-04-05 |  |  |
| SDR-2-CON-PW-ZA-2790 |  | Install Chambers & Valves | 19d | 2027-03-15 | 2027-04-05 | SDR-2-CON-PW-ZA-2760 | 4d |
|  | 2 | **Testing** |  | 2027-04-06 | 2027-04-14 |  |  |
| SDR-2-CON-PW-ZA-2770 |  | Testing for Chambers & Valves | 8d | 2027-04-06 | 2027-04-14 | SDR-2-CON-PW-ZA-2790 | 4d |
|  | 6 | **Backfilling** |  | 2027-04-15 | 2027-04-28 |  |  |
| SDR-2-CON-PW-ZA-2800 |  | Backfilling for Chambers & Valves | 12d | 2027-04-15 | 2027-04-28 | SDR-2-CON-PW-ZA-2770 | 4d |
|  | 3 | **PORTABLE WATER IN ( PH2-A-MCC0 )** |  | 2026-12-27 | 2027-04-29 |  |  |
|  | 7 | **Pipes Work** |  | 2026-12-27 | 2027-04-29 |  |  |
|  | 1 | **Excavation** |  | 2026-12-27 | 2027-02-13 |  |  |
| SDR-2-CON-PW-ZA-3790 |  | Excavation for PW HDPE Pipe 160 mm. Section 1 | 21d | 2026-12-27 | 2027-01-19 | SDR-2-CON-PW-ZA-3770 SS | 4d |
| SDR-2-CON-PW-ZA-1400 |  | Excavation for PW HDPE Pipe 160 mm. Section 2 | 21d | 2027-01-20 | 2027-02-13 | SDR-2-CON-PW-ZA-3790 | 6d |
|  | 3 | **bedding Works** |  | 2027-02-14 | 2027-03-14 |  |  |
| SDR-2-CON-PW-ZA-2240 |  | Sand bedding for PW HDPE Pipe 160 mm. | 20d | 2027-02-14 | 2027-03-14 | SDR-2-CON-PW-ZA-1400 | 6d |
|  | 2 | **Pipes Laying** |  | 2027-03-15 | 2027-04-06 |  |  |
| SDR-2-CON-PW-ZA-1410 |  | Install PW 160 mm HDPE Pipe | 20d | 2027-03-15 | 2027-04-06 | SDR-2-CON-PW-ZA-2240 | 6d |
|  | 5 | **Testing** |  | 2027-04-07 | 2027-04-15 |  |  |

| ID | WBS | Task | Duration | Start | Finish | Predecessors | Total float |
| --- | --- | --- | --- | --- | --- | --- | --- |
| SDR-2-CON-PW-ZA-1480 |  | Testing of PW HDPE Pipe 160 mm. | 8d | 2027-04-07 | 2027-04-15 | SDR-2-CON-PW-ZA-1410 | 6d |
|  | 4 | **Backfilling** |  | 2027-04-17 | 2027-04-29 |  |  |
| SDR-2-CON-PW-ZA-2250 |  | Backfilling of PW HDPE Pipe 160 mm. | 12d | 2027-04-17 | 2027-04-29 | SDR-2-CON-PW-ZA-1480 | 6d |
|  | 3 | **Valve Chambers & Valves & Fire Hydrant** |  | 2026-12-27 | 2027-04-29 |  |  |
|  | 3 | **Excavation** |  | 2026-12-27 | 2027-02-13 |  |  |
| SDR-2-CON-PW-ZA-3800 |  | Excavation for Valve Chambers Section 1 | 21d | 2026-12-27 | 2027-01-19 | SDR-2-CON-PW-ZA-3790 SS | 6d |
| SDR-2-CON-PW-ZA-3230 |  | Excavation for Valve Chambers Section 2 | 21d | 2027-01-20 | 2027-02-13 | SDR-2-CON-SL-ZA-3250, SDR-2-CON-PW-ZA-3800 | 6d |
|  | 1 | **bedding Works** |  | 2027-02-14 | 2027-03-14 |  |  |
| SDR-2-CON-PW-ZA-3210 |  | Sand bedding for Valve Chambers | 20d | 2027-02-14 | 2027-03-14 | SDR-2-CON-PW-ZA-3230 | 6d |
|  | 4 | **Install Chambers & Valves & Fire Hydrant** |  | 2027-03-15 | 2027-04-06 |  |  |
| SDR-2-CON-PW-ZA-3240 |  | Install Chambers & Valves | 20d | 2027-03-15 | 2027-04-06 | SDR-2-CON-PW-ZA-3210 | 6d |
|  | 2 | **Testing** |  | 2027-04-07 | 2027-04-13 |  |  |
| SDR-2-CON-PW-ZA-3220 |  | Testing for Chambers & Valves | 6d | 2027-04-07 | 2027-04-13 | SDR-2-CON-PW-ZA-3240 | 6d |
|  | 6 | **Backfilling** |  | 2027-04-14 | 2027-04-29 |  |  |
| SDR-2-CON-PW-ZA-3250 |  | Backfilling for Chambers & Valves | 14d | 2027-04-14 | 2027-04-29 | SDR-2-CON-PW-ZA-3220 | 6d |
|  | 4 | **PORTABLE WATER IN ( PH2-A-MCD0 )** |  | 2026-12-30 | 2027-05-06 |  |  |
|  | 7 | **Pipes Work** |  | 2026-12-30 | 2027-04-28 |  |  |
|  | 1 | **Excavation** |  | 2026-12-30 | 2027-02-16 |  |  |
| SDR-2-CON-PW-ZA-3810 |  | Excavation for PW HDPE Pipe 160 mm. Section 1 | 21d | 2026-12-30 | 2027-01-23 | SDR-2-CON-PW-ZA-3790 SS+3d, SDR-2-CON-SL-ZA-3290, SDR-2-CON-TS-ZA-1270 SS | 4d |
| SDR-2-CON-PW-ZA-3260 |  | Excavation for PW HDPE Pipe 160 mm. Section 2 | 21d | 2027-01-24 | 2027-02-16 | SDR-2-CON-TE-ZA-4170, SDR-2-CON-TE-ZA-4180, SDR-2-CON-TE-ZA-4080, SDR-2-CON-TE-ZA-4090, SDR-2-CON-TE-ZA-3990, SDR-2-CON-TE-ZA-4000, SDR-2-CON-TE-ZA-3900, SDR-2-CON-TE-ZA-3910, SDR-2-CON-TE-ZA-3810, SDR-2-CON-TE-ZA-3820, SDR-2-CON-TE-ZA-3720, SDR-2-CON-PW-ZA-3810 | 4.2d |
|  | 3 | **bedding Works** |  | 2027-02-17 | 2027-03-15 |  |  |
| SDR-2-CON-PW-ZA-3290 |  | Sand bedding for PW HDPE Pipe 160 mm. | 18d | 2027-02-17 | 2027-03-15 | SDR-2-CON-PW-ZA-3260 | 4.2d |
|  | 2 | **Pipes Laying** |  | 2027-03-16 | 2027-04-07 |  |  |
| SDR-2-CON-PW-ZA-3270 |  | Install PW 160 mm HDPE Pipe | 20d | 2027-03-16 | 2027-04-07 | SDR-2-CON-PW-ZA-3290 | 4.2d |
|  | 5 | **Testing** |  | 2027-04-08 | 2027-04-17 |  |  |
| SDR-2-CON-PW-ZA-3280 |  | Testing of PW HDPE Pipe 160 mm. | 8d | 2027-04-08 | 2027-04-17 | SDR-2-CON-PW-ZA-3270 | 4.2d |
|  | 4 | **Backfilling** |  | 2027-04-18 | 2027-04-28 |  |  |
| SDR-2-CON-PW-ZA-3300 |  | Backfilling of PW HDPE Pipe 160 mm. | 10d | 2027-04-18 | 2027-04-28 | SDR-2-CON-PW-ZA-3280 | 4.2d |
|  | 3 | **Valve Chambers & Valves & Fire Hydrant** |  | 2026-12-30 | 2027-05-06 |  |  |
|  | 3 | **Excavation** |  | 2026-12-30 | 2027-02-25 |  |  |
| SDR-2-CON-PW-ZA-3820 |  | Excavation for Valve Chambers Section 1 | 21d | 2026-12-30 | 2027-01-23 | SDR-2-CON-PW-ZA-3810 SS | 7d |
| SDR-2-CON-PW-ZA-3330 |  | Excavation for Valve Chambers Section 2 | 21d | 2027-02-01 | 2027-02-25 | SDR-2-CON-CC-ZA-1820 FS+8d, SDR-2-CON-CC-ZA-1780, SDR-2-CON-CC-ZA-1660, SDR-2-CON-TE-ZA-3630, SDR-2-CON-PW-ZA-3820 | 0d |
|  | 1 | **bedding Works** |  | 2027-02-27 | 2027-03-23 |  |  |
| SDR-2-CON-PW-ZA-3310 |  | Sand bedding for Valve Chambers | 18d | 2027-02-27 | 2027-03-23 | SDR-2-CON-PW-ZA-3330 | 0d |
|  | 4 | **Install Chambers & Valves & Fire Hydrant** |  | 2027-03-24 | 2027-04-15 |  |  |
| SDR-2-CON-PW-ZA-3340 |  | Install Chambers & Valves | 20d | 2027-03-24 | 2027-04-15 | SDR-2-CON-PW-ZA-3310 | 0d |
|  | 2 | **Testing** |  | 2027-04-17 | 2027-04-25 |  |  |
| SDR-2-CON-PW-ZA-3320 |  | Testing for Chambers & Valves | 8d | 2027-04-17 | 2027-04-25 | SDR-2-CON-PW-ZA-3340 | 0d |
|  | 6 | **Backfilling** |  | 2027-04-26 | 2027-05-06 |  |  |
| SDR-2-CON-PW-ZA-3350 |  | Backfilling for Chambers & Valves | 10d | 2027-04-26 | 2027-05-06 | SDR-2-CON-PW-ZA-3320 | 0d |
|  | 5 | **PORTABLE WATER IN ( PH2-A-MCE0 )** |  | 2027-01-07 | 2027-05-06 |  |  |
|  | 7 | **Pipes Work** |  | 2027-01-07 | 2027-05-06 |  |  |
|  | 1 | **Excavation** |  | 2027-01-07 | 2027-02-25 |  |  |
| SDR-2-CON-PW-ZA-3830 |  | Excavation for PW HDPE Pipe 160 mm. Section 1 | 21d | 2027-01-07 | 2027-01-31 | SDR-2-CON-PW-ZA-3810 SS+3d, SDR-2-CON-CC-ZA-1640, SDR-2-CON-CC-ZA-1620, SDR-2-CON-TE-ZA-4530, SDR-2-CON-TE-ZA-4540, SDR-2-CON-TE-ZA-4350, SDR-2-CON-TE-ZA-4360, SDR-2-CON-TE-ZA-4260, SDR-2-CON-TE-ZA-4270, SDR-2-CON-MV-ZA-1340, SDR-2-CON-TE-ZA-3730, SDR-2-CON-TE-ZA-3640 | 0d |
| SDR-2-CON-PW-ZA-3360 |  | Excavation for PW HDPE Pipe 160 mm. Section 2 | 21d | 2027-02-01 | 2027-02-25 | SDR-2-CON-TE-ZA-4440, SDR-2-CON-TE-ZA-4450, SDR-2-CON-PW-ZA-3830 | 0d |
|  | 3 | **bedding Works** |  | 2027-02-27 | 2027-03-23 |  |  |
| SDR-2-CON-PW-ZA-3390 |  | Sand bedding for PW HDPE Pipe 160 mm. | 18d | 2027-02-27 | 2027-03-23 | SDR-2-CON-PW-ZA-3360 | 0d |
|  | 2 | **Pipes Laying** |  | 2027-03-24 | 2027-04-10 |  |  |
| SDR-2-CON-PW-ZA-3370 |  | Install PW 160 mm HDPE Pipe | 15d | 2027-03-24 | 2027-04-10 | SDR-2-CON-PW-ZA-3390 | 0d |
|  | 5 | **Testing** |  | 2027-04-11 | 2027-04-19 |  |  |
| SDR-2-CON-PW-ZA-3380 |  | Testing of PW HDPE Pipe 160 mm. | 8d | 2027-04-11 | 2027-04-19 | SDR-2-CON-PW-ZA-3370 | 0d |
|  | 4 | **Backfilling** |  | 2027-04-20 | 2027-05-06 |  |  |
| SDR-2-CON-PW-ZA-3400 |  | Backfilling of PW HDPE Pipe 160 mm. | 15d | 2027-04-20 | 2027-05-06 | SDR-2-CON-PW-ZA-3380 | 0d |
|  | 3 | **Valve Chambers & Valves & Fire Hydrant** |  | 2027-01-07 | 2027-05-06 |  |  |
|  | 3 | **Excavation** |  | 2027-01-07 | 2027-02-23 |  |  |
| SDR-2-CON-PW-ZA-3840 |  | Excavation for Valve Chambers Section 1 | 20d | 2027-01-07 | 2027-01-30 | SDR-2-CON-PW-ZA-3830 SS | 0d |
| SDR-2-CON-PW-ZA-3430 |  | Excavation for Valve Chambers Section 2 | 20d | 2027-01-31 | 2027-02-23 | SDR-2-CON-TE-ZA-3450, SDR-2-CON-TE-ZA-3360, SDR-2-CON-PW-ZA-3840 | 0d |
|  | 1 | **bedding Works** |  | 2027-02-24 | 2027-03-21 |  |  |
| SDR-2-CON-PW-ZA-3410 |  | Sand bedding for Valve Chambers | 18d | 2027-02-24 | 2027-03-21 | SDR-2-CON-PW-ZA-3430 | 0d |
|  | 4 | **Install Chambers & Valves & Fire Hydrant** |  | 2027-03-22 | 2027-04-10 |  |  |
| SDR-2-CON-PW-ZA-3440 |  | Install Chambers & Valves | 17d | 2027-03-22 | 2027-04-10 | SDR-2-CON-PW-ZA-3410 | 0d |
|  | 2 | **Testing** |  | 2027-04-11 | 2027-04-19 |  |  |
| SDR-2-CON-PW-ZA-3420 |  | Testing for Chambers & Valves | 8d | 2027-04-11 | 2027-04-19 | SDR-2-CON-PW-ZA-3440 | 0d |
|  | 6 | **Backfilling** |  | 2027-04-20 | 2027-05-06 |  |  |
| SDR-2-CON-PW-ZA-3450 |  | Backfilling for Chambers & Valves | 15d | 2027-04-20 | 2027-05-06 | SDR-2-CON-PW-ZA-3420 | 0d |
|  | 6 | **PORTABLE WATER IN ( PH2-A-MCF0 )** |  | 2027-01-11 | 2027-05-10 |  |  |
|  | 7 | **Pipes Work** |  | 2027-01-11 | 2027-05-10 |  |  |
|  | 1 | **Excavation** |  | 2027-01-11 | 2027-03-01 |  |  |
| SDR-2-CON-PW-ZA-3850 |  | Excavation for PW HDPE Pipe 160 mm. Section 1 | 21d | 2027-01-11 | 2027-02-03 | SDR-2-CON-PW-ZA-3830 SS+3d, SDR-2-CON-TE-ZA-3540, SDR-2-CON-TE-ZA-3550, SDR-2-CON-TE-ZA-3460, SDR-2-CON-TE-ZA-3370, SDR-2-CON-TE-ZA-3270 | 0d |
| SDR-2-CON-PW-ZA-3460 |  | Excavation for PW HDPE Pipe 160 mm. Section 2 | 21d | 2027-02-04 | 2027-03-01 | SDR-2-CON-PW-ZA-3850 | 9d |

| ID | WBS | Task | Duration | Start | Finish | Predecessors | Total float |
| --- | --- | --- | --- | --- | --- | --- | --- |
|  | 3 | **bedding Works** |  | 2027-03-02 | 2027-03-27 |  |  |
| SDR-2-CON-PW-ZA-3490 |  | Sand bedding for PW HDPE Pipe 160 mm. | 18d | 2027-03-02 | 2027-03-27 | SDR-2-CON-PW-ZA-3460 | 9d |
|  | 2 | **Pipes Laying** |  | 2027-03-28 | 2027-04-19 |  |  |
| SDR-2-CON-PW-ZA-3470 |  | Install PW 160 mm HDPE Pipe | 20d | 2027-03-28 | 2027-04-19 | SDR-2-CON-PW-ZA-3490 | 9d |
|  | 5 | **Testing** |  | 2027-04-20 | 2027-04-26 |  |  |
| SDR-2-CON-PW-ZA-3480 |  | Testing of PW HDPE Pipe 160 mm. | 6d | 2027-04-20 | 2027-04-26 | SDR-2-CON-PW-ZA-3470 | 9d |
|  | 4 | **Backfilling** |  | 2027-04-27 | 2027-05-10 |  |  |
| SDR-2-CON-PW-ZA-3500 |  | Backfilling of PW HDPE Pipe 160 mm. | 12d | 2027-04-27 | 2027-05-10 | SDR-2-CON-PW-ZA-3480 | 9d |
|  | 3 | **Valve Chambers & Valves & Fire Hydrant** |  | 2027-01-11 | 2027-05-10 |  |  |
|  | 3 | **Excavation** |  | 2027-01-11 | 2027-03-01 |  |  |
| SDR-2-CON-PW-ZA-3860 |  | Excavation for Valve Chambers Section 1 | 21d | 2027-01-11 | 2027-02-03 | SDR-2-CON-PW-ZA-3850 SS | 8d |
| SDR-2-CON-PW-ZA-3530 |  | Excavation for Valve Chambers Section 2 | 21d | 2027-02-04 | 2027-03-01 | SDR-2-CON-PW-ZA-3860 | 8d |
|  | 1 | **bedding Works** |  | 2027-03-02 | 2027-03-27 |  |  |
| SDR-2-CON-PW-ZA-3510 |  | Sand bedding for Valve Chambers | 18d | 2027-03-02 | 2027-03-27 | SDR-2-CON-PW-ZA-3530 | 8d |
|  | 4 | **Install Chambers & Valves & Fire Hydrant** |  | 2027-03-28 | 2027-04-19 |  |  |
| SDR-2-CON-PW-ZA-3540 |  | Install Chambers & Valves | 20d | 2027-03-28 | 2027-04-19 | SDR-2-CON-PW-ZA-3510 | 8d |
|  | 2 | **Testing** |  | 2027-04-20 | 2027-04-27 |  |  |
| SDR-2-CON-PW-ZA-3520 |  | Testing for Chambers & Valves | 7d | 2027-04-20 | 2027-04-27 | SDR-2-CON-PW-ZA-3540 | 8d |
|  | 6 | **Backfilling** |  | 2027-04-28 | 2027-05-10 |  |  |
| SDR-2-CON-PW-ZA-3550 |  | Backfilling for Chambers & Valves | 11d | 2027-04-28 | 2027-05-10 | SDR-2-CON-PW-ZA-3520 | 8d |
|  | 7 | **PORTABLE WATER IN ( PH2-A-MCG0 )** |  | 2027-01-14 | 2027-05-12 |  |  |
|  | 7 | **Pipes Work** |  | 2027-01-14 | 2027-05-12 |  |  |
|  | 1 | **Excavation** |  | 2027-01-14 | 2027-03-04 |  |  |
| SDR-2-CON-PW-ZA-3870 |  | Excavation for PW HDPE Pipe 160 mm. Section 1 | 21d | 2027-01-14 | 2027-02-07 | SDR-2-CON-PW-ZA-3850 SS+3d | 0d |
| SDR-2-CON-PW-ZA-3560 |  | Excavation for PW HDPE Pipe 160 mm. Section 2 | 21d | 2027-02-08 | 2027-03-04 | SDR-2-CON-PW-ZA-3870 | 5d |
|  | 3 | **bedding Works** |  | 2027-03-06 | 2027-04-01 |  |  |
| SDR-2-CON-PW-ZA-3590 |  | Sand bedding for PW HDPE Pipe 160 mm. | 20d | 2027-03-06 | 2027-04-01 | SDR-2-CON-PW-ZA-3560 | 8d |
|  | 2 | **Pipes Laying** |  | 2027-04-03 | 2027-04-18 |  |  |
| SDR-2-CON-PW-ZA-3570 |  | Install PW 160 mm HDPE Pipe | 14d | 2027-04-03 | 2027-04-18 | SDR-2-CON-PW-ZA-3590 | 8d |
|  | 5 | **Testing** |  | 2027-04-19 | 2027-04-27 |  |  |
| SDR-2-CON-PW-ZA-3580 |  | Testing of PW HDPE Pipe 160 mm. | 8d | 2027-04-19 | 2027-04-27 | SDR-2-CON-PW-ZA-3570 | 8d |
|  | 4 | **Backfilling** |  | 2027-04-28 | 2027-05-12 |  |  |
| SDR-2-CON-PW-ZA-3600 |  | Backfilling of PW HDPE Pipe 160 mm. | 13d | 2027-04-28 | 2027-05-12 | SDR-2-CON-PW-ZA-3580 | 8d |
|  | 3 | **Valve Chambers & Valves & Fire Hydrant** |  | 2027-01-14 | 2027-05-12 |  |  |
|  | 3 | **Excavation** |  | 2027-01-14 | 2027-03-04 |  |  |
| SDR-2-CON-PW-ZA-3880 |  | Excavation for Valve Chambers Section 1 | 21d | 2027-01-14 | 2027-02-07 | SDR-2-CON-ST-ZA-4650, SDR-2-CON-PW-ZA-3870 SS | 5d |
| SDR-2-CON-PW-ZA-3630 |  | Excavation for Valve Chambers Section 2 | 21d | 2027-02-08 | 2027-03-04 | SDR-2-CON-PW-ZA-3560 SS, SDR-2-CON-PW-ZA-3880 | 5d |
|  | 1 | **bedding Works** |  | 2027-03-06 | 2027-04-01 |  |  |
| SDR-2-CON-PW-ZA-3610 |  | Sand bedding for Valve Chambers | 20d | 2027-03-06 | 2027-04-01 | SDR-2-CON-PW-ZA-3630 | 5d |
|  | 4 | **Install Chambers & Valves & Fire Hydrant** |  | 2027-04-03 | 2027-04-21 |  |  |
| SDR-2-CON-PW-ZA-3640 |  | Install Chambers & Valves | 17d | 2027-04-03 | 2027-04-21 | SDR-2-CON-PW-ZA-3610 | 5d |
|  | 2 | **Testing** |  | 2027-04-22 | 2027-05-01 |  |  |
| SDR-2-CON-PW-ZA-3620 |  | Testing for Chambers & Valves | 8d | 2027-04-22 | 2027-05-01 | SDR-2-CON-PW-ZA-3640 | 5d |
|  | 6 | **Backfilling** |  | 2027-05-02 | 2027-05-12 |  |  |
| SDR-2-CON-PW-ZA-3650 |  | Backfilling for Chambers & Valves | 10d | 2027-05-02 | 2027-05-12 | SDR-2-CON-PW-ZA-3620 | 5d |
|  | 8 | **PORTABLE WATER IN ( PH2-A-MCH0 )** |  | 2027-01-18 | 2027-05-15 |  |  |
|  | 7 | **Pipes Work** |  | 2027-01-18 | 2027-05-15 |  |  |
|  | 1 | **Excavation** |  | 2027-01-18 | 2027-03-08 |  |  |
| SDR-2-CON-PW-ZA-3890 |  | Excavation for PW HDPE Pipe 225 mm. Section 1 | 21d | 2027-01-18 | 2027-02-10 | SDR-2-CON-PW-ZA-3870 SS+3d | 0d |
| SDR-2-CON-PW-ZA-2810 |  | Excavation for PW HDPE Pipe 225 mm. Section 2 | 21d | 2027-02-11 | 2027-03-08 | SDR-2-CON-PW-ZA-3890 | 5d |
|  | 3 | **bedding Works** |  | 2027-03-14 | 2027-04-05 |  |  |
| SDR-2-CON-PW-ZA-2840 |  | Sand bedding for PW HDPE Pipe 225 mm. | 20d | 2027-03-14 | 2027-04-05 | SDR-2-CON-PW-ZA-2810 | 5d |
|  | 2 | **Pipes Laying** |  | 2027-04-06 | 2027-04-22 |  |  |
| SDR-2-CON-PW-ZA-2820 |  | Install PW 225 mm HDPE Pipe | 15d | 2027-04-06 | 2027-04-22 | SDR-2-CON-PW-ZA-2840 | 5d |
|  | 5 | **Testing** |  | 2027-04-24 | 2027-05-01 |  |  |
| SDR-2-CON-PW-ZA-2830 |  | Testing of PW HDPE Pipe 225 mm. | 7d | 2027-04-24 | 2027-05-01 | SDR-2-CON-PW-ZA-2820 | 5d |
|  | 4 | **Backfilling** |  | 2027-05-02 | 2027-05-15 |  |  |
| SDR-2-CON-PW-ZA-2850 |  | Backfilling of PW HDPE Pipe 225 mm. | 12d | 2027-05-02 | 2027-05-15 | SDR-2-CON-PW-ZA-2830 | 5d |
|  | 3 | **Valve Chambers & Valves & Fire Hydrant** |  | 2027-01-18 | 2027-05-15 |  |  |
|  | 3 | **Excavation** |  | 2027-01-18 | 2027-03-08 |  |  |
| SDR-2-CON-PW-ZA-3900 |  | Excavation for Valve Chambers Section 1 | 21d | 2027-01-18 | 2027-02-10 | SDR-2-CON-RW-ZA-2510, SDR-2-CON-PW-ZA-3890 SS | 5d |
| SDR-2-CON-PW-ZA-2880 |  | Excavation for Valve Chambers Section 2 | 21d | 2027-02-11 | 2027-03-08 | SDR-2-CON-PW-ZA-3900 | 5d |
|  | 1 | **bedding Works** |  | 2027-03-14 | 2027-04-05 |  |  |
| SDR-2-CON-PW-ZA-2860 |  | Sand bedding for Valve Chambers | 20d | 2027-03-14 | 2027-04-05 | SDR-2-CON-PW-ZA-2880 | 5d |
|  | 4 | **Install Chambers & Valves & Fire Hydrant** |  | 2027-04-06 | 2027-04-22 |  |  |
| SDR-2-CON-PW-ZA-2890 |  | Install Chambers & Valves | 15d | 2027-04-06 | 2027-04-22 | SDR-2-CON-PW-ZA-2860 | 5d |
|  | 2 | **Testing** |  | 2027-04-24 | 2027-05-01 |  |  |
| SDR-2-CON-PW-ZA-2870 |  | Testing for Chambers & Valves | 7d | 2027-04-24 | 2027-05-01 | SDR-2-CON-RW-ZA-2550, SDR-2-CON-PW-ZA-2890 | 5d |
|  | 6 | **Backfilling** |  | 2027-05-02 | 2027-05-15 |  |  |
| SDR-2-CON-PW-ZA-2900 |  | Backfilling for Chambers & Valves | 12d | 2027-05-02 | 2027-05-15 | SDR-2-CON-PW-ZA-2870 | 5d |

| ID | WBS | Task | Duration | Start | Finish | Predecessors | Total float |
| --- | --- | --- | --- | --- | --- | --- | --- |
|  | 9 | **PORTABLE WATER IN ( PH2-ART-MC00 )** |  | 2027-01-21 | 2027-05-22 |  |  |
|  | 7 | **Pipes Work** |  | 2027-01-21 | 2027-05-22 |  |  |
|  | 1 | **Excavation** |  | 2027-01-21 | 2027-03-16 |  |  |
| SDR-2-CON-PW-ZA-3910 |  | Excavation for PW HDPE Pipes 315 mm Section 1 | 21d | 2027-01-21 | 2027-02-14 | SDR-2-CON-PW-ZA-3890 SS+3d | 0d |
| SDR-2-CON-PW-ZA-2360 |  | Excavation for PW HDPE Pipes 315 mm Section 2 | 21d | 2027-02-15 | 2027-03-16 | SDR-2-CON-PW-ZA-3910 | 0d |
|  | 8 | **bedding Works** |  | 2027-03-17 | 2027-04-08 |  |  |
| SDR-2-CON-PW-ZA-2440 |  | Sand bedding for PW HDPE Pipes 315 mm | 20d | 2027-03-17 | 2027-04-08 | SDR-2-CON-PW-ZA-2360 | 0d |
|  | 2 | **Pipes Laying** |  | 2027-04-10 | 2027-04-28 |  |  |
| SDR-2-CON-PW-ZA-2370 |  | Install PW 315 mm HDPE Pipe | 17d | 2027-04-10 | 2027-04-28 | SDR-2-CON-RW-ZA-2690, SDR-2-CON-PW-ZA-2440 | 0d |
|  | 5 | **Testing** |  | 2027-04-29 | 2027-05-06 |  |  |
| SDR-2-CON-PW-ZA-2430 |  | Testing of PW HDPE Pipe 315 mm. | 7d | 2027-04-29 | 2027-05-06 | SDR-2-CON-PW-ZA-2370 | 0d |
|  | 9 | **Backfilling** |  | 2027-05-08 | 2027-05-22 |  |  |
| SDR-2-CON-PW-ZA-2450 |  | Backfilling of PW HDPE Pipe 315 mm. | 8d | 2027-05-08 | 2027-05-22 | SDR-2-CON-PW-ZA-2430 | 0d |
|  | 3 | **Valve Chambers & Valves & Fire Hydrant** |  | 2027-01-21 | 2027-05-22 |  |  |
|  | 3 | **Excavation** |  | 2027-01-21 | 2027-03-16 |  |  |
| SDR-2-CON-PW-ZA-3920 |  | Excavation for Valve Chambers Section 1 | 21d | 2027-01-21 | 2027-02-14 | SDR-2-CON-PW-ZA-3910 SS | 0d |
| SDR-2-CON-PW-ZA-2400 |  | Excavation for Valve Chambers Section 2 | 21d | 2027-02-15 | 2027-03-16 | SDR-2-CON-PW-ZA-3920 | 0d |
|  | 1 | **bedding Works** |  | 2027-03-17 | 2027-04-08 |  |  |
| SDR-2-CON-PW-ZA-2380 |  | Sand bedding for Valve Chambers | 20d | 2027-03-17 | 2027-04-08 | SDR-2-CON-PW-ZA-2400 | 0d |
|  | 4 | **Install Chambers & Valves & Fire Hydrant** |  | 2027-04-10 | 2027-04-27 |  |  |
| SDR-2-CON-PW-ZA-2410 |  | Install Chambers & Valves | 16d | 2027-04-10 | 2027-04-27 | SDR-2-CON-PW-ZA-2380 | 0d |
|  | 2 | **Testing** |  | 2027-04-28 | 2027-05-06 |  |  |
| SDR-2-CON-PW-ZA-2390 |  | Testing for Chambers & Valves | 8d | 2027-04-28 | 2027-05-06 | SDR-2-CON-PW-ZA-2410 | 0d |
|  | 6 | **Backfilling** |  | 2027-05-08 | 2027-05-22 |  |  |
| SDR-2-CON-PW-ZA-2420 |  | Backfilling for Chambers & Valves | 8d | 2027-05-08 | 2027-05-22 | SDR-2-CON-PW-ZA-2390 | 0d |
|  | 10 | **PORTABLE WATER IN ( PH2-ART-MC10 )** |  | 2027-01-24 | 2027-05-24 |  |  |
|  | 7 | **Pipes Work** |  | 2027-01-24 | 2027-05-24 |  |  |
|  | 1 | **Excavation** |  | 2027-01-24 | 2027-03-18 |  |  |
| SDR-2-CON-PW-ZA-3930 |  | Excavation for PW HDPE Pipes 315 mm Section 1 | 21d | 2027-01-24 | 2027-02-16 | SDR-2-CON-PW-ZA-3910 SS+2d | 0d |
| SDR-2-CON-PW-ZA-2460 |  | Excavation for PW HDPE Pipes 315 mm Section 2 | 21d | 2027-02-17 | 2027-03-18 | SDR-2-CON-PW-ZA-3930 | 0d |
|  | 8 | **bedding Works** |  | 2027-03-20 | 2027-04-11 |  |  |
| SDR-2-CON-PW-ZA-2540 |  | Sand bedding for PW HDPE Pipes 315 mm | 20d | 2027-03-20 | 2027-04-11 | SDR-2-CON-PW-ZA-2460 | 0d |
|  | 2 | **Pipes Laying** |  | 2027-04-12 | 2027-04-28 |  |  |
| SDR-2-CON-PW-ZA-2470 |  | Install PW 315 mm HDPE Pipe | 15d | 2027-04-12 | 2027-04-28 | SDR-2-CON-PW-ZA-2540 | 0d |
|  | 5 | **Testing** |  | 2027-04-29 | 2027-05-06 |  |  |
| SDR-2-CON-PW-ZA-2530 |  | Testing of PW HDPE Pipe 315 mm. | 7d | 2027-04-29 | 2027-05-06 | SDR-2-CON-PW-ZA-2470 | 0d |
|  | 9 | **Backfilling** |  | 2027-05-08 | 2027-05-24 |  |  |
| SDR-2-CON-PW-ZA-2550 |  | Backfilling of PW HDPE Pipe 315 mm. | 10d | 2027-05-08 | 2027-05-24 | SDR-2-CON-PW-ZA-2230, SDR-2-CON-PW-ZA-2530 | 0d |
|  | 3 | **Valve Chambers & Valves & Fire Hydrant** |  | 2027-01-24 | 2027-05-24 |  |  |
|  | 3 | **Excavation** |  | 2027-01-24 | 2027-03-18 |  |  |
| SDR-2-CON-PW-ZA-3940 |  | Excavation for Valve Chambers Section 1 | 21d | 2027-01-24 | 2027-02-16 | SDR-2-CON-TE-ZA-1060, SDR-2-CON-MV-ZA-1260, SDR-2-CON-MV-ZA-1220, SDR-2-CON-PW-ZA-3930 SS | 0d |
| SDR-2-CON-PW-ZA-2500 |  | Excavation for Valve Chambers Section 2 | 21d | 2027-02-17 | 2027-03-18 | SDR-2-CON-PW-ZA-3940 | 0d |
|  | 1 | **bedding Works** |  | 2027-03-20 | 2027-04-11 |  |  |
| SDR-2-CON-PW-ZA-2480 |  | Sand bedding for Valve Chambers | 20d | 2027-03-20 | 2027-04-11 | SDR-2-CON-PW-ZA-2500 | 0d |
|  | 4 | **Install Chambers & Valves & Fire Hydrant** |  | 2027-04-12 | 2027-04-27 |  |  |
| SDR-2-CON-PW-ZA-2510 |  | Install Chambers & Valves | 14d | 2027-04-12 | 2027-04-27 | SDR-2-CON-PW-ZA-2480 | 0d |
|  | 2 | **Testing** |  | 2027-04-28 | 2027-05-06 |  |  |
| SDR-2-CON-PW-ZA-2490 |  | Testing for Chambers & Valves | 8d | 2027-04-28 | 2027-05-06 | SDR-2-CON-PW-ZA-2510 | 0d |
|  | 6 | **Backfilling** |  | 2027-05-08 | 2027-05-24 |  |  |
| SDR-2-CON-PW-ZA-2520 |  | Backfilling for Chambers & Valves | 10d | 2027-05-08 | 2027-05-24 | SDR-2-CON-PW-ZA-2490 | 0d |
|  | ZG | **ZONE G** |  | 2027-01-03 | 2027-05-26 |  |  |
|  | 1 | **PORTABLE WATER IN ( PH2-G-MCA0 )** |  | 2027-01-18 | 2027-05-15 |  |  |
|  | 7 | **Pipes Work** |  | 2027-01-18 | 2027-05-15 |  |  |
|  | 1 | **Excavation** |  | 2027-01-18 | 2027-03-08 |  |  |
| SDR-2-CON-PW-ZG-1520 |  | Excavation for PW HDPE Pipes 400 mm Section 1 | 21d | 2027-01-18 | 2027-02-10 | SDR-2-CON-MV-ZA-1180, SDR-2-CON-TS-ZA-2300 | 3d |
| SDR-2-CON-PW-ZG-1000 |  | Excavation for PW HDPE Pipes 400 mm Section 2 | 21d | 2027-02-11 | 2027-03-08 | SDR-2-CON-PW-ZG-1520 | 5d |
|  | 3 | **bedding Works** |  | 2027-03-14 | 2027-03-31 |  |  |
| SDR-2-CON-PW-ZG-1500 |  | Sand bedding for PW HDPE Pipes 400 mm | 16d | 2027-03-14 | 2027-03-31 | SDR-2-CON-PW-ZG-1000 | 5d |
|  | 2 | **Pipes Laying** |  | 2027-04-01 | 2027-04-19 |  |  |
| SDR-2-CON-PW-ZG-1010 |  | Install PW 400 mm HDPE Pipe | 16d | 2027-04-01 | 2027-04-19 | SDR-2-CON-PW-ZG-1500 | 5d |
|  | 5 | **Testing** |  | 2027-04-20 | 2027-05-01 |  |  |
| SDR-2-CON-PW-ZG-1080 |  | Testing of PW HDPE Pipe 400 mm. | 10d | 2027-04-20 | 2027-05-01 | SDR-2-CON-PW-ZG-1010 | 5d |
|  | 4 | **Backfilling** |  | 2027-05-02 | 2027-05-15 |  |  |
| SDR-2-CON-PW-ZG-1510 |  | Backfilling of PW HDPE Pipe 400 mm. | 12d | 2027-05-02 | 2027-05-15 | SDR-2-CON-PW-ZG-1080 | 5d |
|  | 3 | **Valve Chambers & Valves & Fire Hydrant** |  | 2027-01-18 | 2027-05-15 |  |  |
|  | 3 | **Excavation** |  | 2027-01-18 | 2027-03-08 |  |  |
| SDR-2-CON-PW-ZA-3950 |  | Excavation for Valve Chambers Section 1 | 21d | 2027-01-18 | 2027-02-10 | SDR-2-CON-PW-ZG-1520 SS | 3d |
| SDR-2-CON-PW-ZA-3680 |  | Excavation for Valve Chambers Section 2 | 21d | 2027-02-11 | 2027-03-08 | SDR-2-CON-PW-ZA-3950 | 3d |
|  | 1 | **bedding Works** |  | 2027-03-14 | 2027-04-03 |  |  |
| SDR-2-CON-PW-ZA-3660 |  | Sand bedding for Valve Chambers | 18d | 2027-03-14 | 2027-04-03 | SDR-2-CON-PW-ZA-3680 | 3d |

| ID | WBS | Task | Duration | Start | Finish | Predecessors | Total float |
| --- | --- | --- | --- | --- | --- | --- | --- |
|  | 4 | **Install Chambers & Valves & Fire Hydrant** |  | 2027-04-04 | 2027-04-21 |  |  |
| SDR-2-CON-PW-ZA-3690 |  | Install Chambers & Valves | 16d | 2027-04-04 | 2027-04-21 | SDR-2-CON-PW-ZA-3660 | 3d |
|  | 2 | **Testing** |  | 2027-04-22 | 2027-05-03 |  |  |
| SDR-2-CON-PW-ZA-3670 |  | Testing for Chambers & Valves | 10d | 2027-04-22 | 2027-05-03 | SDR-2-CON-PW-ZA-3690 | 3d |
|  | 6 | **Backfilling** |  | 2027-05-04 | 2027-05-15 |  |  |
| SDR-2-CON-PW-ZA-3700 |  | Backfilling for Chambers & Valves | 10d | 2027-05-04 | 2027-05-15 | SDR-2-CON-PW-ZA-3670 | 3d |
|  | 2 | **PORTABLE WATER IN ( PH2-G-MCE0 )** |  | 2027-01-19 | 2027-05-25 |  |  |
|  | 7 | **Pipes Work** |  | 2027-01-19 | 2027-05-24 |  |  |
|  | 1 | **Excavation** |  | 2027-01-19 | 2027-03-14 |  |  |
| SDR-2-CON-PW-ZA-3960 |  | Excavation for PW HDPE Pipe 225 mm. Section 1 | 21d | 2027-01-19 | 2027-02-11 | SDR-2-CON-TS-ZA-2400 | 3d |
| SDR-2-CON-PW-ZA-2910 |  | Excavation for PW HDPE Pipe 225 mm. Section 2 | 21d | 2027-02-13 | 2027-03-14 | SDR-2-CON-PW-ZA-3960 | 3d |
|  | 3 | **bedding Works** |  | 2027-03-15 | 2027-04-04 |  |  |
| SDR-2-CON-PW-ZA-2940 |  | Sand bedding for PW HDPE Pipe 225 mm. | 18d | 2027-03-15 | 2027-04-04 | SDR-2-CON-PW-ZA-2910 | 3d |
|  | 2 | **Pipes Laying** |  | 2027-04-05 | 2027-04-25 |  |  |
| SDR-2-CON-PW-ZA-2920 |  | Install PW 225 mm HDPE Pipe | 18d | 2027-04-05 | 2027-04-25 | SDR-2-CON-PW-ZA-2940 | 3d |
|  | 5 | **Testing** |  | 2027-04-26 | 2027-05-03 |  |  |
| SDR-2-CON-PW-ZA-2930 |  | Testing of PW HDPE Pipe 225 mm. | 7d | 2027-04-26 | 2027-05-03 | SDR-2-CON-PW-ZA-2920 | 3d |
|  | 4 | **Backfilling** |  | 2027-05-04 | 2027-05-24 |  |  |
| SDR-2-CON-PW-ZA-2950 |  | Backfilling of PW HDPE Pipe 225 mm. | 13d | 2027-05-04 | 2027-05-24 | SDR-2-CON-PW-ZA-2930 | 3d |
|  | 3 | **Valve Chambers & Valves & Fire Hydrant** |  | 2027-01-19 | 2027-05-25 |  |  |
|  | 3 | **Excavation** |  | 2027-01-19 | 2027-03-14 |  |  |
| SDR-2-CON-PW-ZA-3970 |  | Excavation for Valve Chambers Section 1 | 21d | 2027-01-19 | 2027-02-11 | SDR-2-CON-TE-ZA-3370, SDR-2-CON-PW-ZA-3960 SS | 8d |
| SDR-2-CON-PW-ZA-2980 |  | Excavation for Valve Chambers Section 2 | 21d | 2027-02-13 | 2027-03-14 | SDR-2-CON-PW-ZA-3970 | 8d |
|  | 1 | **bedding Works** |  | 2027-03-15 | 2027-04-04 |  |  |
| SDR-2-CON-PW-ZA-2960 |  | Sand bedding for Valve Chambers | 18d | 2027-03-15 | 2027-04-04 | SDR-2-CON-PW-ZA-2980 | 8d |
|  | 4 | **Install Chambers & Valves & Fire Hydrant** |  | 2027-04-05 | 2027-04-24 |  |  |
| SDR-2-CON-PW-ZA-2990 |  | Install Chambers & Valves | 17d | 2027-04-05 | 2027-04-24 | SDR-2-CON-PW-ZA-2960 | 8d |
|  | 2 | **Testing** |  | 2027-04-25 | 2027-05-05 |  |  |
| SDR-2-CON-PW-ZA-2970 |  | Testing for Chambers & Valves | 10d | 2027-04-25 | 2027-05-05 | SDR-2-CON-PW-ZA-2990 | 8d |
|  | 6 | **Backfilling** |  | 2027-05-06 | 2027-05-25 |  |  |
| SDR-2-CON-PW-ZA-3000 |  | Backfilling for Chambers & Valves | 12d | 2027-05-06 | 2027-05-25 | SDR-2-CON-PW-ZA-2970 | 8d |
|  | 3 | **PORTABLE WATER IN ( PH2-G-MCF0 )** |  | 2027-01-03 | 2027-05-10 |  |  |
|  | 7 | **Pipes Work** |  | 2027-01-03 | 2027-05-10 |  |  |
|  | 1 | **Excavation** |  | 2027-01-03 | 2027-02-20 |  |  |
| SDR-2-CON-PW-ZA-3980 |  | Excavation for PW HDPE Pipe 225 mm. Section 1 | 21d | 2027-01-03 | 2027-01-26 | SDR-2-CON-TE-ZA-3280, SDR-2-CON-TS-ZA-2900 | 13d |
| SDR-2-CON-PW-ZA-3010 |  | Excavation for PW HDPE Pipe 225 mm. Section 2 | 21d | 2027-01-27 | 2027-02-20 | SDR-2-CON-SL-ZA-3290, SDR-2-CON-TE-ZA-3640 FS+4d, SDR-2-CON-TE-ZA-3370, SDR-2-CON-PW-ZA-3980 | 15d |
|  | 3 | **bedding Works** |  | 2027-02-21 | 2027-03-18 |  |  |
| SDR-2-CON-PW-ZA-3040 |  | Sand bedding for PW HDPE Pipe 225 mm. | 18d | 2027-02-21 | 2027-03-18 | SDR-2-CON-PW-ZA-3010 | 15d |
|  | 2 | **Pipes Laying** |  | 2027-03-20 | 2027-04-10 |  |  |
| SDR-2-CON-PW-ZA-3020 |  | Install PW 225 mm HDPE Pipe | 19d | 2027-03-20 | 2027-04-10 | SDR-2-CON-PW-ZA-3040 | 15d |
|  | 5 | **Testing** |  | 2027-04-11 | 2027-04-19 |  |  |
| SDR-2-CON-PW-ZA-3030 |  | Testing of PW HDPE Pipe 225 mm. | 8d | 2027-04-11 | 2027-04-19 | SDR-2-CON-PW-ZA-3020 | 15d |
|  | 4 | **Backfilling** |  | 2027-04-20 | 2027-05-10 |  |  |
| SDR-2-CON-PW-ZA-3050 |  | Backfilling of PW HDPE Pipe 225 mm. | 18d | 2027-04-20 | 2027-05-10 | SDR-2-CON-PW-ZA-3030 | 15d |
|  | 3 | **Valve Chambers & Valves & Fire Hydrant** |  | 2027-01-03 | 2027-05-10 |  |  |
|  | 3 | **Excavation** |  | 2027-01-03 | 2027-02-20 |  |  |
| SDR-2-CON-PW-ZA-3990 |  | Excavation for Valve Chambers Section 1 | 21d | 2027-01-03 | 2027-01-26 | SDR-2-CON-PW-ZA-3980 SS | 13d |
| SDR-2-CON-PW-ZA-3080 |  | Excavation for Valve Chambers Section 2 | 21d | 2027-01-27 | 2027-02-20 | SDR-2-CON-PW-ZA-3990 | 13d |
|  | 1 | **bedding Works** |  | 2027-02-21 | 2027-03-21 |  |  |
| SDR-2-CON-PW-ZA-3060 |  | Sand bedding for Valve Chambers | 20d | 2027-02-21 | 2027-03-21 | SDR-2-CON-PW-ZA-3080 | 13d |
|  | 4 | **Install Chambers & Valves & Fire Hydrant** |  | 2027-03-22 | 2027-04-12 |  |  |
| SDR-2-CON-PW-ZA-3090 |  | Install Chambers & Valves | 19d | 2027-03-22 | 2027-04-12 | SDR-2-CON-PW-ZA-3060 | 13d |
|  | 2 | **Testing** |  | 2027-04-13 | 2027-04-21 |  |  |
| SDR-2-CON-PW-ZA-3070 |  | Testing for Chambers & Valves | 8d | 2027-04-13 | 2027-04-21 | SDR-2-CON-PW-ZA-3090 | 13d |
|  | 6 | **Backfilling** |  | 2027-04-22 | 2027-05-10 |  |  |
| SDR-2-CON-PW-ZA-3100 |  | Backfilling for Chambers & Valves | 16d | 2027-04-22 | 2027-05-10 | SDR-2-CON-PW-ZA-3070 | 13d |
|  | 4 | **PORTABLE WATER IN ( PH2-G-MCG0 )** |  | 2027-01-16 | 2027-05-22 |  |  |
|  | 7 | **Pipes Work** |  | 2027-01-16 | 2027-05-22 |  |  |
|  | 1 | **Excavation** |  | 2027-01-16 | 2027-03-06 |  |  |
| SDR-2-CON-PW-ZA-4000 |  | Excavation for PW HDPE Pipe 225 mm. Section 1 | 21d | 2027-01-16 | 2027-02-08 | SDR-2-CON-MV-ZA-1180, SDR-2-CON-TS-ZA-3000 | 9d |
| SDR-2-CON-PW-ZA-3110 |  | Excavation for PW HDPE Pipe 225 mm. Section 2 | 21d | 2027-02-09 | 2027-03-06 | SDR-2-CON-PW-ZA-4000 | 9d |
|  | 3 | **bedding Works** |  | 2027-03-07 | 2027-03-31 |  |  |
| SDR-2-CON-PW-ZA-3140 |  | Sand bedding for PW HDPE Pipe 225 mm. | 18d | 2027-03-07 | 2027-03-31 | SDR-2-CON-PW-ZA-3110 | 9d |
|  | 2 | **Pipes Laying** |  | 2027-04-01 | 2027-04-17 |  |  |
| SDR-2-CON-PW-ZA-3120 |  | Install PW 225 mm HDPE Pipe | 14d | 2027-04-01 | 2027-04-17 | SDR-2-CON-PW-ZA-3140 | 9d |
|  | 5 | **Testing** |  | 2027-04-18 | 2027-04-26 |  |  |
| SDR-2-CON-PW-ZA-3130 |  | Testing of PW HDPE Pipe 225 mm. | 8d | 2027-04-18 | 2027-04-26 | SDR-2-CON-PW-ZA-3120 | 9d |
|  | 4 | **Backfilling** |  | 2027-04-27 | 2027-05-22 |  |  |
| SDR-2-CON-PW-ZA-3150 |  | Backfilling of PW HDPE Pipe 225 mm. | 17d | 2027-04-27 | 2027-05-22 | SDR-2-CON-PW-ZA-3130 | 9d |
|  | 3 | **Valve Chambers & Valves & Fire Hydrant** |  | 2027-01-16 | 2027-05-22 |  |  |

| ID | WBS | Task | Duration | Start | Finish | Predecessors | Total float |
| --- | --- | --- | --- | --- | --- | --- | --- |
|  | 3 | **Excavation** |  | 2027-01-16 | 2027-03-06 |  |  |
| SDR-2-CON-PW-ZA-4010 |  | Excavation for Valve Chambers Section 1 | 21d | 2027-01-16 | 2027-02-08 | SDR-2-CON-PW-ZA-4000 SS | 9d |
| SDR-2-CON-PW-ZA-3180 |  | Excavation for Valve Chambers Section 2 | 21d | 2027-02-09 | 2027-03-06 | SDR-2-CON-PW-ZA-4010 | 9d |
|  | 1 | **bedding Works** |  | 2027-03-07 | 2027-03-31 |  |  |
| SDR-2-CON-PW-ZA-3160 |  | Sand bedding for Valve Chambers | 18d | 2027-03-07 | 2027-03-31 | SDR-2-CON-PW-ZA-3180 | 9d |
|  | 4 | **Install Chambers & Valves & Fire Hydrant** |  | 2027-04-01 | 2027-04-17 |  |  |
| SDR-2-CON-PW-ZA-3190 |  | Install Chambers & Valves | 14d | 2027-04-01 | 2027-04-17 | SDR-2-CON-PW-ZA-3160 | 9d |
|  | 2 | **Testing** |  | 2027-04-18 | 2027-04-26 |  |  |
| SDR-2-CON-PW-ZA-3170 |  | Testing for Chambers & Valves | 8d | 2027-04-18 | 2027-04-26 | SDR-2-CON-PW-ZA-3190 | 9d |
|  | 6 | **Backfilling** |  | 2027-04-27 | 2027-05-22 |  |  |
| SDR-2-CON-PW-ZA-3200 |  | Backfilling for Chambers & Valves | 17d | 2027-04-27 | 2027-05-22 | SDR-2-CON-PW-ZA-3170 | 9d |
|  | 5 | **PORTABLE WATER IN ( PH2-G-MCZ0 )** |  | 2027-01-19 | 2027-05-26 |  |  |
|  | 7 | **Pipes Work** |  | 2027-01-19 | 2027-05-26 |  |  |
|  | 1 | **Excavation** |  | 2027-01-19 | 2027-03-14 |  |  |
| SDR-2-CON-PW-ZA-4020 |  | Excavation for PW HDPE Pipes 315 mm Section 1 | 21d | 2027-01-19 | 2027-02-11 | SDR-2-CON-TS-ZA-2500 FS+2d | 5d |
| SDR-2-CON-PW-ZA-2560 |  | Excavation for PW HDPE Pipes 315 mm Section 2 | 21d | 2027-02-13 | 2027-03-14 | SDR-2-CON-PW-ZA-4020 | 5d |
|  | 8 | **bedding Works** |  | 2027-03-15 | 2027-04-05 |  |  |
| SDR-2-CON-PW-ZA-2640 |  | Sand bedding for PW HDPE Pipes 315 mm | 19d | 2027-03-15 | 2027-04-05 | SDR-2-CON-PW-ZA-2560 | 5d |
|  | 2 | **Pipes Laying** |  | 2027-04-06 | 2027-04-24 |  |  |
| SDR-2-CON-PW-ZA-2570 |  | Install PW 315 mm HDPE Pipe | 16d | 2027-04-06 | 2027-04-24 | SDR-2-CON-PW-ZA-2640 | 5d |
|  | 5 | **Testing** |  | 2027-04-25 | 2027-05-01 |  |  |
| SDR-2-CON-PW-ZA-2630 |  | Testing of PW HDPE Pipe 315 mm. | 6d | 2027-04-25 | 2027-05-01 | SDR-2-CON-PW-ZA-2570 | 5d |
|  | 9 | **Backfilling** |  | 2027-05-02 | 2027-05-26 |  |  |
| SDR-2-CON-PW-ZA-2650 |  | Backfilling of PW HDPE Pipe 315 mm. | 17d | 2027-05-02 | 2027-05-26 | SDR-2-CON-PW-ZA-2630 | 5d |
|  | 3 | **Valve Chambers & Valves & Fire Hydrant** |  | 2027-01-19 | 2027-05-26 |  |  |
|  | 3 | **Excavation** |  | 2027-01-19 | 2027-03-14 |  |  |
| SDR-2-CON-PW-ZA-4030 |  | Excavation for Valve Chambers Section 1 | 21d | 2027-01-19 | 2027-02-11 | SDR-2-CON-PW-ZA-4020 SS | 5d |
| SDR-2-CON-PW-ZA-2600 |  | Excavation for Valve Chambers Section 2 | 21d | 2027-02-13 | 2027-03-14 | SDR-2-CON-PW-ZA-4030 | 5d |
|  | 1 | **bedding Works** |  | 2027-03-15 | 2027-04-05 |  |  |
| SDR-2-CON-PW-ZA-2580 |  | Sand bedding for Valve Chambers | 19d | 2027-03-15 | 2027-04-05 | SDR-2-CON-PW-ZA-2600 | 5d |
|  | 4 | **Install Chambers & Valves & Fire Hydrant** |  | 2027-04-06 | 2027-04-24 |  |  |
| SDR-2-CON-PW-ZA-2610 |  | Install Chambers & Valves | 16d | 2027-04-06 | 2027-04-24 | SDR-2-CON-PW-ZA-2580 | 5d |
|  | 2 | **Testing** |  | 2027-04-25 | 2027-05-01 |  |  |
| SDR-2-CON-PW-ZA-2590 |  | Testing for Chambers & Valves | 6d | 2027-04-25 | 2027-05-01 | SDR-2-CON-PW-ZA-2610 | 5d |
|  | 6 | **Backfilling** |  | 2027-05-02 | 2027-05-26 |  |  |
| SDR-2-CON-PW-ZA-2620 |  | Backfilling for Chambers & Valves | 17d | 2027-05-02 | 2027-05-26 | SDR-2-CON-PW-ZA-2590 | 5d |
|  | EW | **Electrical Works** |  | 2026-07-07 | 2027-02-10 |  |  |
|  | ZA | **ZONE A** |  | 2026-07-07 | 2027-02-10 |  |  |
|  | 1 | **Street Lighting Network** |  | 2026-07-07 | 2027-02-10 |  |  |
|  | 16 | **Street Lighting Network IN ( PH2-COL-MC10 )** |  | 2026-07-07 | 2026-11-26 |  |  |
|  | 10 | **Excavation** |  | 2026-07-07 | 2026-08-26 |  |  |
| SDR-2-CON-SL-ZA-3590 |  | Excavation for LV Cable trench Section 1 | 21d | 2026-07-07 | 2026-07-30 | SDR-2-PRO-DEL-M-1010, SDR-2-PRO-DEL-M-1000, SDR-2-PRO-DES-E-1010, SDR-2-PRO-ST-E-1080, SDR-2-PRO-DEL-E-1060 | 0d |
| SDR-2-CON-SL-ZA-1000 |  | Excavation for LV Cable trench Section 2 | 21d | 2026-08-03 | 2026-08-26 | SDR-2-PRO-DEL-E-1060, SDR-2-CON-SL-ZA-3590 FS+2d | 0d |
|  | 11 | **Install Footings** |  | 2026-08-27 | 2026-09-20 |  |  |
| SDR-2-CON-SL-ZA-1010 |  | Install Footings | 21d | 2026-08-27 | 2026-09-20 | SDR-2-CON-SL-ZA-1000, SDR-2-PRO-DEL-E-1000, SDR-2-PRO-DEL-E-1010, SDR-2-PRO-DEL-E-1210, SDR-2-PRO-DEL-E-1030, SDR-2-PRO-DEL-E-1020, SDR-2-PRO-DEL-E-1090 FS+12d, SDR-2-PRO-DEL-E-1090 FF, SDR-2-PRO-DEL-E-1070 FS+11d | 19d |
|  | 12 | **Backfilling** |  | 2026-09-21 | 2026-10-15 |  |  |
| SDR-2-CON-SL-ZA-1110 |  | Backfilling over LV Cables of Street lighting | 21d | 2026-09-21 | 2026-10-15 | SDR-2-CON-SL-ZA-1010 | 19d |
|  | 13 | **Install pole** |  | 2026-11-03 | 2026-11-26 |  |  |
| SDR-2-CON-SL-ZA-1100 |  | Install Pole | 21d | 2026-11-03 | 2026-11-26 | SDR-2-PRO-MAL-E-1040, SDR-2-CON-SL-ZA-1010, SDR-2-CON-SL-ZA-1110 FS+15d, SDR-2-PRO-DEL-E-1100 | 19d |
|  | 17 | **Street Lighting Network IN ( PH2-COL-MC20 )** |  | 2026-07-13 | 2026-11-30 |  |  |
|  | 10 | **Excavation** |  | 2026-07-13 | 2026-08-30 |  |  |
| SDR-2-CON-SL-ZA-3600 |  | Excavation for LV Cable trench Section 1 | 21d | 2026-07-13 | 2026-08-05 | SDR-2-PRO-DES-E-1010, SDR-2-CON-SL-ZA-3590 SS+5d | 0d |
| SDR-2-CON-SL-ZA-2870 |  | Excavation for LV Cable trench Section 2 | 21d | 2026-08-06 | 2026-08-30 | SDR-2-CON-SL-ZA-3600 | 16d |
|  | 11 | **Install Footings** |  | 2026-08-31 | 2026-09-24 |  |  |
| SDR-2-CON-SL-ZA-2880 |  | Install Footings | 21d | 2026-08-31 | 2026-09-24 | SDR-2-CON-SL-ZA-2870, SDR-2-PRO-DES-E-1020 | 16d |
|  | 12 | **Backfilling** |  | 2026-09-26 | 2026-10-19 |  |  |
| SDR-2-CON-SL-ZA-2900 |  | Backfilling over LV Cables of Street lighting | 21d | 2026-09-26 | 2026-10-19 | SDR-2-CON-SL-ZA-2880 | 16d |
|  | 13 | **Install pole** |  | 2026-11-07 | 2026-11-30 |  |  |
| SDR-2-CON-SL-ZA-2890 |  | Install Pole | 21d | 2026-11-07 | 2026-11-30 | SDR-2-CON-SL-ZA-2880, SDR-2-CON-SL-ZA-2900 FS+15d, SDR-2-PRO-DEL-E-1080 | 16d |
|  | 18 | **Street Lighting Network IN ( PH2-A-MCA0 )** |  | 2026-07-19 | 2026-11-30 |  |  |
|  | 10 | **Excavation** |  | 2026-07-19 | 2026-09-05 |  |  |
| SDR-2-CON-SL-ZA-3610 |  | Excavation for LV Cable trench Section 1 | 21d | 2026-07-19 | 2026-08-11 | SDR-2-CON-SL-ZA-3600 SS+5d | 0d |
| SDR-2-CON-SL-ZA-1300 |  | Excavation for LV Cable trench Section 2 | 21d | 2026-08-12 | 2026-09-05 | SDR-2-CON-SL-ZA-3610 | 10d |
|  | 11 | **Install Footings** |  | 2026-09-06 | 2026-09-30 |  |  |
| SDR-2-CON-SL-ZA-1310 |  | Install Footings | 21d | 2026-09-06 | 2026-09-30 | SDR-2-CON-ST-ZA-6290, SDR-2-CON-SL-ZA-1300 | 10d |
|  | 12 | **Backfilling** |  | 2026-10-01 | 2026-10-25 |  |  |
| SDR-2-CON-SL-ZA-1410 |  | Backfilling over LV Cables of Street lighting | 21d | 2026-10-01 | 2026-10-25 | SDR-2-CON-SL-ZA-1310 | 10d |
|  | 13 | **Install pole** |  | 2026-11-07 | 2026-11-30 |  |  |
| SDR-2-CON-SL-ZA-1400 |  | Install Pole | 21d | 2026-11-07 | 2026-11-30 | SDR-2-CON-SL-ZA-1410 FS+10d | 10d |
|  | 19 | **Street Lighting Network IN ( PH2-A-MCB0 )** |  | 2026-07-25 | 2026-12-06 |  |  |

| ID | WBS | Task | Duration | Start | Finish | Predecessors | Total float |
| --- | --- | --- | --- | --- | --- | --- | --- |
|  | 10 | **Excavation** |  | 2026-07-25 | 2026-09-10 |  |  |
| SDR-2-CON-SL-ZA-3620 |  | Excavation for LV Cable trench Section 1 | 21d | 2026-07-25 | 2026-08-17 | SDR-2-CON-SL-ZA-3610 SS+5d | 0d |
| SDR-2-CON-SL-ZA-2950 |  | Excavation for LV Cable trench Section 2 | 21d | 2026-08-18 | 2026-09-10 | SDR-2-CON-SL-ZA-3620 | 0d |
|  | 11 | **Install Footings** |  | 2026-09-12 | 2026-10-06 |  |  |
| SDR-2-CON-SL-ZA-2960 |  | Install Footings | 21d | 2026-09-12 | 2026-10-06 | SDR-2-CON-SL-ZA-2950 | 16d |
|  | 12 | **Backfilling** |  | 2026-10-07 | 2026-10-31 |  |  |
| SDR-2-CON-SL-ZA-2980 |  | Backfilling over LV Cables of Street lighting | 21d | 2026-10-07 | 2026-10-31 | SDR-2-CON-SL-ZA-2960 | 16d |
|  | 13 | **Install pole** |  | 2026-11-12 | 2026-12-06 |  |  |
| SDR-2-CON-SL-ZA-2970 |  | Install Pole | 21d | 2026-11-12 | 2026-12-06 | SDR-2-CON-SL-ZA-2980 FS+10d | 16d |
|  | 20 | **Street Lighting Network IN ( PH2-A-MCC0 )** |  | 2026-07-30 | 2026-12-17 |  |  |
|  | 10 | **Excavation** |  | 2026-07-30 | 2026-09-16 |  |  |
| SDR-2-CON-SL-ZA-3630 |  | Excavation for LV Cable trench Section 1 | 21d | 2026-07-30 | 2026-08-23 | SDR-2-CON-SL-ZA-3620 SS+5d | 4d |
| SDR-2-CON-SL-ZA-2990 |  | Excavation for LV Cable trench Section 2 | 21d | 2026-08-24 | 2026-09-16 | SDR-2-CON-SL-ZA-3630 | 9d |
|  | 11 | **Install Footings** |  | 2026-09-17 | 2026-10-12 |  |  |
| SDR-2-CON-SL-ZA-3000 |  | Install Footings | 21d | 2026-09-17 | 2026-10-12 | SDR-2-CON-SL-ZA-2990 | 9d |
|  | 12 | **Backfilling** |  | 2026-10-13 | 2026-11-05 |  |  |
| SDR-2-CON-SL-ZA-3020 |  | Backfilling over LV Cables of Street lighting | 21d | 2026-10-13 | 2026-11-05 | SDR-2-CON-SL-ZA-3000 | 9d |
|  | 13 | **Install pole** |  | 2026-11-24 | 2026-12-17 |  |  |
| SDR-2-CON-SL-ZA-3010 |  | Install Pole | 21d | 2026-11-24 | 2026-12-17 | SDR-2-CON-SL-ZA-3020 FS+15d | 9d |
|  | 21 | **Street Lighting Network IN ( PH2-A-MCD0 )** |  | 2026-08-05 | 2026-12-23 |  |  |
|  | 10 | **Excavation** |  | 2026-08-05 | 2026-09-22 |  |  |
| SDR-2-CON-SL-ZA-3640 |  | Excavation for LV Cable trench Section 1 | 21d | 2026-08-05 | 2026-08-29 | SDR-2-CON-SL-ZA-3630 SS+5d, SDR-2-PRO-DES-E-1000 FS+12d | 4d |
| SDR-2-CON-SL-ZA-3030 |  | Excavation for LV Cable trench Section 2 | 21d | 2026-08-30 | 2026-09-22 | SDR-2-CON-SL-ZA-3640 | 4d |
|  | 11 | **Install Footings** |  | 2026-09-24 | 2026-10-18 |  |  |
| SDR-2-CON-SL-ZA-3040 |  | Install Footings | 21d | 2026-09-24 | 2026-10-18 | SDR-2-CON-SL-ZA-3030 | 4d |
|  | 12 | **Backfilling** |  | 2026-10-19 | 2026-11-11 |  |  |
| SDR-2-CON-SL-ZA-3060 |  | Backfilling over LV Cables of Street lighting | 21d | 2026-10-19 | 2026-11-11 | SDR-2-CON-SL-ZA-3040 | 4d |
|  | 13 | **Install pole** |  | 2026-11-30 | 2026-12-23 |  |  |
| SDR-2-CON-SL-ZA-3050 |  | Install Pole | 21d | 2026-11-30 | 2026-12-23 | SDR-2-CON-MV-ZA-1100, SDR-2-CON-SL-ZA-3550, SDR-2-CON-SL-ZA-3520, SDR-2-CON-SL-ZA-3060 FS+15d | 4d |
|  | 22 | **Street Lighting Network IN ( PH2-A-MCE0 )** |  | 2026-08-11 | 2027-01-21 |  |  |
|  | 10 | **Excavation** |  | 2026-08-11 | 2026-09-29 |  |  |
| SDR-2-CON-SL-ZA-3650 |  | Excavation for LV Cable trench Section 1 | 21d | 2026-08-11 | 2026-09-03 | SDR-2-PRO-ST-E-1050, SDR-2-PRO-ST-E-1020, SDR-2-CON-SL-ZA-3640 SS+5d | 10d |
| SDR-2-CON-SL-ZA-3070 |  | Excavation for LV Cable trench Section 2 | 21d | 2026-09-05 | 2026-09-29 | SDR-2-CON-SL-ZA-3650 | 17d |
|  | 11 | **Install Footings** |  | 2026-09-30 | 2026-10-24 |  |  |
| SDR-2-CON-SL-ZA-3080 |  | Install Footings | 21d | 2026-09-30 | 2026-10-24 | SDR-2-CON-SL-ZA-3070 | 17d |
|  | 12 | **Backfilling** |  | 2026-10-25 | 2026-11-17 |  |  |
| SDR-2-CON-SL-ZA-3100 |  | Backfilling over LV Cables of Street lighting | 21d | 2026-10-25 | 2026-11-17 | SDR-2-CON-SL-ZA-3080 | 17d |
|  | 13 | **Install pole** |  | 2026-12-31 | 2027-01-21 |  |  |
| SDR-2-CON-SL-ZA-3090 |  | Install Pole | 19d | 2026-12-31 | 2027-01-21 | SDR-2-CON-ST-ZA-4040, SDR-2-CON-RW-ZA-3390 FS+2d, SDR-2-CON-RW-ZA-3270 FS+2d, SDR-2-CON-SL-ZA-3100 FS+15d | 4d |
|  | 23 | **Street Lighting Network IN ( PH2-A-MCF0 )** |  | 2026-08-17 | 2027-01-02 |  |  |
|  | 10 | **Excavation** |  | 2026-08-17 | 2026-10-05 |  |  |
| SDR-2-CON-SL-ZA-3660 |  | Excavation for LV Cable trench Section 1 | 21d | 2026-08-17 | 2026-09-09 | SDR-2-PRO-ST-E-1040, SDR-2-PRO-ST-E-1030, SDR-2-CON-SL-ZA-3650 SS+5d | 10d |
| SDR-2-CON-SL-ZA-3110 |  | Excavation for LV Cable trench Section 2 | 21d | 2026-09-10 | 2026-10-05 | SDR-2-CON-SL-ZA-3660 | 19d |
|  | 11 | **Install Footings** |  | 2026-10-06 | 2026-10-28 |  |  |
| SDR-2-CON-SL-ZA-3120 |  | Install Footings | 20d | 2026-10-06 | 2026-10-28 | SDR-2-CON-SL-ZA-3110 | 19d |
|  | 12 | **Backfilling** |  | 2026-10-29 | 2026-11-21 |  |  |
| SDR-2-CON-SL-ZA-3140 |  | Backfilling over LV Cables of Street lighting | 20d | 2026-10-29 | 2026-11-21 | SDR-2-CON-SL-ZA-3120 | 19d |
|  | 13 | **Install pole** |  | 2026-12-09 | 2027-01-02 |  |  |
| SDR-2-CON-SL-ZA-3130 |  | Install Pole | 21d | 2026-12-09 | 2027-01-02 | SDR-2-CON-SL-ZA-3140 FS+15d | 19d |
|  | 24 | **Street Lighting Network IN ( PH2-A-MCG0 )** |  | 2026-08-23 | 2026-12-27 |  |  |
|  | 10 | **Excavation** |  | 2026-08-23 | 2026-10-11 |  |  |
| SDR-2-CON-SL-ZA-3670 |  | Excavation for LV Cable trench Section 1 | 21d | 2026-08-23 | 2026-09-15 | SDR-2-CON-SL-ZA-3660 SS+5d | 10d |
| SDR-2-CON-SL-ZA-3150 |  | Excavation for LV Cable trench Section 2 | 21d | 2026-09-16 | 2026-10-11 | SDR-2-CON-SL-ZA-3670 | 20d |
|  | 11 | **Install Footings** |  | 2026-10-12 | 2026-11-03 |  |  |
| SDR-2-CON-SL-ZA-3160 |  | Install Footings | 20d | 2026-10-12 | 2026-11-03 | SDR-2-CON-SL-ZA-3150 | 20d |
|  | 12 | **Backfilling** |  | 2026-11-04 | 2026-11-25 |  |  |
| SDR-2-CON-SL-ZA-3180 |  | Backfilling over LV Cables of Street lighting | 19d | 2026-11-04 | 2026-11-25 | SDR-2-CON-SL-ZA-3160 | 20d |
|  | 13 | **Install pole** |  | 2026-12-14 | 2026-12-27 |  |  |
| SDR-2-CON-SL-ZA-3170 |  | Install Pole | 12d | 2026-12-14 | 2026-12-27 | SDR-2-CON-SL-ZA-3180 FS+15d | 20d |
|  | 25 | **Street Lighting Network IN ( PH2-A-MCH0 )** |  | 2026-08-30 | 2027-01-09 |  |  |
|  | 10 | **Excavation** |  | 2026-08-30 | 2026-10-18 |  |  |
| SDR-2-CON-SL-ZA-3680 |  | Excavation for LV Cable trench Section 1 | 21d | 2026-08-30 | 2026-09-22 | SDR-2-CON-SL-ZA-3670 SS+6d | 10d |
| SDR-2-CON-SL-ZA-3190 |  | Excavation for LV Cable trench Section 2 | 21d | 2026-09-24 | 2026-10-18 | SDR-2-CON-SL-ZA-3680 | 19d |
|  | 11 | **Install Footings** |  | 2026-10-19 | 2026-11-10 |  |  |
| SDR-2-CON-SL-ZA-3200 |  | Install Footings | 20d | 2026-10-19 | 2026-11-10 | SDR-2-CON-SL-ZA-3190 | 19d |
|  | 12 | **Backfilling** |  | 2026-11-11 | 2026-12-02 |  |  |
| SDR-2-CON-SL-ZA-3220 |  | Backfilling over LV Cables of Street lighting | 19d | 2026-11-11 | 2026-12-02 | SDR-2-CON-SL-ZA-3200 | 19d |
|  | 13 | **Install pole** |  | 2026-12-21 | 2027-01-09 |  |  |
| SDR-2-CON-SL-ZA-3210 |  | Install Pole | 17d | 2026-12-21 | 2027-01-09 | SDR-2-CON-SL-ZA-3220 FS+15d | 19d |
|  | 27 | **Street Lighting Network IN ( PH2-ART-MC10 )** |  | 2026-09-06 | 2027-02-10 |  |  |

| ID | WBS | Task | Duration | Start | Finish | Predecessors | Total float |
| --- | --- | --- | --- | --- | --- | --- | --- |
|  | 10 | **Excavation** |  | 2026-09-06 | 2026-10-25 |  |  |
| SDR-2-CON-SL-ZA-3690 |  | Excavation for LV Cable trench Section 1 | 21d | 2026-09-06 | 2026-09-30 | SDR-2-CON-SL-ZA-3680 SS+6d | 10d |
| SDR-2-CON-SL-ZA-2910 |  | Excavation for LV Cable trench Section 2 | 21d | 2026-10-01 | 2026-10-25 | SDR-2-CON-SL-ZA-3690 | 22d |
|  | 11 | **Install Footings** |  | 2026-10-26 | 2026-11-18 |  |  |
| SDR-2-CON-SL-ZA-2920 |  | Install Footings | 21d | 2026-10-26 | 2026-11-18 | SDR-2-CON-SL-ZA-2910 | 22d |
|  | 12 | **Backfilling** |  | 2026-11-19 | 2026-12-13 |  |  |
| SDR-2-CON-SL-ZA-2940 |  | Backfilling over LV Cables of Street lighting | 21d | 2026-11-19 | 2026-12-13 | SDR-2-CON-SL-ZA-2920 | 22d |
|  | 13 | **Install pole** |  | 2027-01-18 | 2027-02-10 |  |  |
| SDR-2-CON-SL-ZA-2930 |  | Install Pole | 21d | 2027-01-18 | 2027-02-10 | SDR-2-CON-RW-ZA-2320, SDR-2-CON-SL-ZA-2920, SDR-2-CON-SL-ZA-2940 FS+13d | 19d |
|  | 10 | **Lighting Pole Panels** |  | 2026-09-12 | 2026-12-31 |  |  |
|  | 1 | **Excavation** |  | 2026-09-12 | 2026-10-06 |  |  |
| SDR-2-CON-SL-ZA-2650 |  | Street Lighting Panels Excavation | 21d | 2026-09-12 | 2026-10-06 | SDR-2-CON-SL-ZA-3690 SS+5d, SDR-2-PRO-ST-E-1110, SDR-2-PRO-MAL-E-1080 | 10d |
|  | 2 | **Install Footings** |  | 2026-10-07 | 2026-10-29 |  |  |
| SDR-2-CON-SL-ZA-2760 |  | Installation Footings Street Lighting Panels | 20d | 2026-10-07 | 2026-10-29 | SDR-2-CON-SL-ZA-2650 | 23d |
|  | 3 | **Backfilling** |  | 2026-10-31 | 2026-11-19 |  |  |
| SDR-2-CON-SL-ZA-2770 |  | Street Lighting Panels Backfilling | 18d | 2026-10-31 | 2026-11-19 | SDR-2-CON-SL-ZA-2760 | 23d |
|  | 4 | **Install pole** |  | 2026-12-08 | 2026-12-31 |  |  |
| SDR-2-CON-SL-ZA-2780 |  | Street Lighting Panels Installation | 21d | 2026-12-08 | 2026-12-31 | SDR-2-CON-SL-ZA-2770 FS+15d | 23d |
|  | 11 | **Ring Main Unit** |  | 2026-09-12 | 2026-12-02 |  |  |
|  | 1 | **Leveling** |  | 2026-09-12 | 2026-10-05 |  |  |
| SDR-2-CON-SL-ZA-2660 |  | Ring Main Unit leveling | 20d | 2026-09-12 | 2026-10-05 | SDR-2-CON-SL-ZA-2650 SS | 10d |
|  | 2 | **Lean Concrete** |  | 2026-10-06 | 2026-10-28 |  |  |
| SDR-2-CON-SL-ZA-2790 |  | Ring Main Unit Lean Concrete | 20d | 2026-10-06 | 2026-10-28 | SDR-2-CON-SL-ZA-2660 | 19d |
|  | 3 | **Installation** |  | 2026-11-10 | 2026-12-02 |  |  |
| SDR-2-CON-SL-ZA-2800 |  | Ring Main Unit installation for Street Lighting | 20d | 2026-11-10 | 2026-12-02 | SDR-2-PRO-ST-M-1060, SDR-2-PRO-ST-M-1070, SDR-2-CON-SL-ZA-2790 FS+10d | 19d |
|  | 12 | **Feeder Pillars** |  | 2026-09-12 | 2026-12-08 |  |  |
|  | 1 | **Leveling** |  | 2026-09-12 | 2026-10-05 |  |  |
| SDR-2-CON-SL-ZA-2670 |  | Feeder Pillars Leveling | 20d | 2026-09-12 | 2026-10-05 | SDR-2-CON-SL-ZA-2660 SS, SDR-2-PRO-ST-E-1130, SDR-2-PRO-MAL-E-1100 | 10d |
|  | 2 | **Lean Concrete** |  | 2026-10-06 | 2026-10-28 |  |  |
| SDR-2-CON-SL-ZA-2810 |  | Feeder Pillars Lean Concrete | 20d | 2026-10-06 | 2026-10-28 | SDR-2-CON-SL-ZA-2670 | 14d |
|  | 3 | **Installation** |  | 2026-11-16 | 2026-12-08 |  |  |
| SDR-2-CON-SL-ZA-2820 |  | Feeder Pillars Installation | 20d | 2026-11-16 | 2026-12-08 | SDR-2-CON-MV-ZA-1100, SDR-2-CON-SL-ZA-2810 FS+15d | 14d |
|  | 13 | **KWH Frame** |  | 2026-09-13 | 2026-11-22 |  |  |
|  | 1 | **Leveling** |  | 2026-09-13 | 2026-10-06 |  |  |
| SDR-2-CON-SL-ZA-2680 |  | KWH meter mounting frame Leveling | 20d | 2026-09-13 | 2026-10-06 | SDR-2-CON-SL-ZA-2670 SS+1d, SDR-2-PRO-ST-E-1120, SDR-2-PRO-MAL-E-1090 | 10d |
|  | 2 | **Lean Concrete** |  | 2026-10-07 | 2026-10-29 |  |  |
| SDR-2-CON-SL-ZA-2830 |  | KWH meter mounting frame Lean Concrete | 20d | 2026-10-07 | 2026-10-29 | SDR-2-CON-SL-ZA-2680 | 20d |
|  | 3 | **Installation** |  | 2026-10-31 | 2026-11-22 |  |  |
| SDR-2-CON-SL-ZA-2840 |  | KWH meter mounting frame installation | 20d | 2026-10-31 | 2026-11-22 | SDR-2-CON-SL-ZA-2830 | 20d |
|  | 14 | **Street Lighting Sub-station** |  | 2026-09-14 | 2026-11-24 |  |  |
|  | 1 | **Leveling** |  | 2026-09-14 | 2026-10-07 |  |  |
| SDR-2-CON-SL-ZA-2690 |  | Unit Substation Leveling | 20d | 2026-09-14 | 2026-10-07 | SDR-2-CON-SL-ZA-2680 SS+1d, SDR-2-PRO-ST-E-1100, SDR-2-PRO-MAL-E-1070 | 18d |
|  | 2 | **Lean Concrete** |  | 2026-10-08 | 2026-10-31 |  |  |
| SDR-2-CON-SL-ZA-2850 |  | Unit Substation Lean Concrete | 20d | 2026-10-08 | 2026-10-31 | SDR-2-CON-SL-ZA-2690 | 18d |
|  | 3 | **Installation** |  | 2026-11-01 | 2026-11-24 |  |  |
| SDR-2-CON-SL-ZA-2860 |  | Unit Substation Install for Street Lighting | 21d | 2026-11-01 | 2026-11-24 | SDR-2-CON-SL-ZA-2850 | 18d |
|  | 2 | **MV Network** |  | 2026-08-09 | 2026-12-22 |  |  |
|  | 1 | **LOOP 3** |  | 2026-08-09 | 2026-11-14 |  |  |
|  | 6 | **Excavation** |  | 2026-08-09 | 2026-09-01 |  |  |
| SDR-2-CON-MV-ZA-1000 |  | Excavation Works | 21d | 2026-08-09 | 2026-09-01 | SDR-2-CON-SL-ZA-1000 SS+5d | 0d |
|  | 7 | **Pipe laying** |  | 2026-09-02 | 2026-09-26 |  |  |
| SDR-2-CON-MV-ZA-1070 |  | Pipe Laying | 20d | 2026-09-02 | 2026-09-26 | SDR-2-CON-MV-ZA-1000 | 15d |
|  | 8 | **Backfilling** |  | 2026-09-27 | 2026-10-20 |  |  |
| SDR-2-CON-MV-ZA-1150 |  | Backfilling Works | 21d | 2026-09-27 | 2026-10-20 | SDR-2-PRO-MAL-E-1000, SDR-2-CON-MV-ZA-1070 | 15d |
|  | 9 | **Pulling Cable** |  | 2026-10-21 | 2026-11-14 |  |  |
| SDR-2-CON-MV-ZA-1100 |  | Pulling Cable | 21d | 2026-10-21 | 2026-11-14 | SDR-2-PRO-ST-E-1000, SDR-2-CON-MV-ZA-1070, SDR-2-CON-MV-ZA-1150 | 15d |
|  | 2 | **LOOP 4** |  | 2026-08-20 | 2026-12-13 |  |  |
|  | 6 | **Excavation** |  | 2026-08-20 | 2026-09-13 |  |  |
| SDR-2-CON-MV-ZA-1160 |  | Excavation Works | 21d | 2026-08-20 | 2026-09-13 | SDR-2-CON-MV-ZA-1000 SS+10d | 19d |
|  | 7 | **Pipe laying** |  | 2026-09-14 | 2026-10-08 |  |  |
| SDR-2-CON-MV-ZA-1170 |  | Pipe Laying | 21d | 2026-09-14 | 2026-10-08 | SDR-2-CON-MV-ZA-1160 | 22d |
|  | 8 | **Backfilling** |  | 2026-10-10 | 2026-11-02 |  |  |
| SDR-2-CON-MV-ZA-1190 |  | Backfilling Works | 21d | 2026-10-10 | 2026-11-02 | SDR-2-CON-MV-ZA-1170 | 22d |
|  | 9 | **Pulling Cable** |  | 2026-11-19 | 2026-12-13 |  |  |
| SDR-2-CON-MV-ZA-1180 |  | Pulling Cable | 21d | 2026-11-19 | 2026-12-13 | SDR-2-CON-MV-ZA-1100, SDR-2-CON-MV-ZA-1170, SDR-2-CON-MV-ZA-1190 FS+14d | 22d |
|  | 3 | **LOOP 5** |  | 2026-08-31 | 2026-12-16 |  |  |
|  | 6 | **Excavation** |  | 2026-08-31 | 2026-09-24 |  |  |
| SDR-2-CON-MV-ZA-1200 |  | Excavation Works | 21d | 2026-08-31 | 2026-09-24 | SDR-2-CON-MV-ZA-1160 SS+9d | 19d |
|  | 7 | **Pipe laying** |  | 2026-09-26 | 2026-10-19 |  |  |
| SDR-2-CON-MV-ZA-1210 |  | Pipe Laying | 21d | 2026-09-26 | 2026-10-19 | SDR-2-CON-MV-ZA-1200 | 19d |

| ID | WBS | Task | Duration | Start | Finish | Predecessors | Total float |
| --- | --- | --- | --- | --- | --- | --- | --- |
|  | 8 | **Backfilling** |  | 2026-10-20 | 2026-11-12 |  |  |
| SDR-2-CON-MV-ZA-1230 |  | Backfilling Works | 21d | 2026-10-20 | 2026-11-12 | SDR-2-CON-MV-ZA-1210 | 19d |
|  | 9 | **Pulling Cable** |  | 2026-11-23 | 2026-12-16 |  |  |
| SDR-2-CON-MV-ZA-1220 |  | Pulling Cable | 21d | 2026-11-23 | 2026-12-16 | SDR-2-CON-MV-ZA-1210, SDR-2-CON-MV-ZA-1230 FS+8d | 19d |
|  | 4 | **LOOP 6** |  | 2026-09-09 | 2026-12-22 |  |  |
|  | 6 | **Excavation** |  | 2026-09-09 | 2026-10-04 |  |  |
| SDR-2-CON-MV-ZA-1240 |  | Excavation Works | 21d | 2026-09-09 | 2026-10-04 | SDR-2-CON-MV-ZA-1200 SS+8d | 20d |
|  | 7 | **Pipe laying** |  | 2026-10-05 | 2026-10-27 |  |  |
| SDR-2-CON-MV-ZA-1250 |  | Pipe Laying | 20d | 2026-10-05 | 2026-10-27 | SDR-2-CON-MV-ZA-1240 | 20d |
|  | 8 | **Backfilling** |  | 2026-10-28 | 2026-11-21 |  |  |
| SDR-2-CON-MV-ZA-1270 |  | Backfilling Works | 21d | 2026-10-28 | 2026-11-21 | SDR-2-CON-MV-ZA-1250 | 20d |
|  | 9 | **Pulling Cable** |  | 2026-11-29 | 2026-12-22 |  |  |
| SDR-2-CON-MV-ZA-1260 |  | Pulling Cable | 21d | 2026-11-29 | 2026-12-22 | SDR-2-CON-MV-ZA-1100, SDR-2-CON-MV-ZA-1250, SDR-2-CON-MV-ZA-1270 FS+6d | 20d |
|  | 3 | **TELECOMMUNICATIONS Works** |  | 2026-08-27 | 2027-01-21 |  |  |
|  | 1 | **TELECOMMUNICATION IN ( PH2-COL-MC10 )** |  | 2026-08-27 | 2027-01-03 |  |  |
|  | 3 | **Ducts** |  | 2026-08-27 | 2027-01-03 |  |  |
|  | 2 | **Excavation** |  | 2026-08-27 | 2026-10-15 |  |  |
| SDR-2-CON-TE-ZA-4560 |  | Excavation for telecom trench Section 1 | 21d | 2026-08-27 | 2026-09-20 | SDR-2-CON-SL-ZA-1000 | 14d |
| SDR-2-CON-TE-ZA-1000 |  | Excavation for telecom trench Section 2 | 21d | 2026-09-21 | 2026-10-15 | SDR-2-CON-TE-ZA-4560 | 14d |
|  | 5 | **Pipe laying** |  | 2026-10-17 | 2026-11-07 |  |  |
| SDR-2-CON-TE-ZA-1010 |  | HDPE Pipes for Telecom Installation | 19d | 2026-10-17 | 2026-11-07 | SDR-2-CON-TE-ZA-1000, SDR-2-PRO-MAS-E-1010 | 14d |
|  | 6 | **Backfilling** |  | 2026-11-08 | 2026-11-28 |  |  |
| SDR-2-CON-TE-ZA-1020 |  | Backfilling over HDPE Telecom Pipes | 18d | 2026-11-08 | 2026-11-28 | SDR-2-CON-TE-ZA-1010 | 14d |
|  | 7 | **Pulling Cable** |  | 2026-12-10 | 2027-01-03 |  |  |
| SDR-2-CON-TE-ZA-1840 |  | Pulling Cable | 21d | 2026-12-10 | 2027-01-03 | SDR-2-CON-TE-ZA-1020 FS+10d | 14d |
|  | 4 | **Manholes** |  | 2026-08-27 | 2026-12-28 |  |  |
|  | 1 | **Excavation** |  | 2026-08-27 | 2026-09-20 |  |  |
| SDR-2-CON-TE-ZA-1030 |  | Excavation for Telecom Manhole | 21d | 2026-08-27 | 2026-09-20 | SDR-2-CON-TE-ZA-4560 SS | 22d |
|  | 2 | **Bedding Work** |  | 2026-09-21 | 2026-10-13 |  |  |
| SDR-2-CON-TE-ZA-1850 |  | Sand bedding for Telecom Manhole | 19d | 2026-09-21 | 2026-10-13 | SDR-2-CON-TE-ZA-1030 | 22d |
|  | 3 | **Install Manholes** |  | 2026-10-14 | 2026-11-05 |  |  |
| SDR-2-CON-TE-ZA-1040 |  | Installation of Telecom Manhole | 20d | 2026-10-14 | 2026-11-05 | SDR-2-CON-TE-ZA-1030, SDR-2-PRO-MAL-E-1050, SDR-2-CON-TE-ZA-1850 | 22d |
|  | 4 | **Testting** |  | 2026-11-07 | 2026-11-22 |  |  |
| SDR-2-CON-TE-ZA-1050 |  | Telecom Manhole finishing works | 14d | 2026-11-07 | 2026-11-22 | SDR-2-CON-TE-ZA-1040 | 22d |
|  | 5 | **Backfilling** |  | 2026-12-05 | 2026-12-28 |  |  |
| SDR-2-CON-TE-ZA-1060 |  | Backfilling over Telecom Manhole | 21d | 2026-12-05 | 2026-12-28 | SDR-2-CON-MV-ZA-1100, SDR-2-CON-TE-ZA-1050 FS+10d | 22d |
|  | 2 | **TELECOMMUNICATION IN ( PH2-COL-MC20 )** |  | 2026-09-02 | 2027-01-04 |  |  |
|  | 3 | **Ducts** |  | 2026-09-02 | 2026-12-07 |  |  |
|  | 2 | **Excavation** |  | 2026-09-02 | 2026-09-27 |  |  |
| SDR-2-CON-TE-ZA-3210 |  | Excavation for telecom trench | 21d | 2026-09-02 | 2026-09-27 | SDR-2-CON-SL-ZA-1000 FS+5d | 4d |
|  | 5 | **Pipe laying** |  | 2026-09-28 | 2026-10-20 |  |  |
| SDR-2-CON-TE-ZA-3220 |  | HDPE Pipes for Telecom Installation | 20d | 2026-09-28 | 2026-10-20 | SDR-2-CON-TE-ZA-3210 | 15d |
|  | 6 | **Backfilling** |  | 2026-10-21 | 2026-11-12 |  |  |
| SDR-2-CON-TE-ZA-3230 |  | Backfilling over HDPE Telecom Pipes | 20d | 2026-10-21 | 2026-11-12 | SDR-2-CON-TE-ZA-3220 | 15d |
|  | 7 | **Pulling Cable** |  | 2026-11-14 | 2026-12-07 |  |  |
| SDR-2-CON-TE-ZA-3280 |  | Pulling Cable | 21d | 2026-11-14 | 2026-12-07 | SDR-2-CON-TE-ZA-3230 | 15d |
|  | 4 | **Manholes** |  | 2026-09-02 | 2027-01-04 |  |  |
|  | 1 | **Excavation** |  | 2026-09-02 | 2026-09-27 |  |  |
| SDR-2-CON-TE-ZA-3240 |  | Excavation for Telecom Manhole | 21d | 2026-09-02 | 2026-09-27 | SDR-2-CON-TE-ZA-3210 SS | 5d |
|  | 2 | **Bedding Work** |  | 2026-09-28 | 2026-10-20 |  |  |
| SDR-2-CON-TE-ZA-3290 |  | Sand bedding for Telecom Manhole | 20d | 2026-09-28 | 2026-10-20 | SDR-2-CON-TE-ZA-3240 | 5d |
|  | 3 | **Install Manholes** |  | 2026-10-21 | 2026-11-12 |  |  |
| SDR-2-CON-TE-ZA-3250 |  | Installation of Telecom Manhole | 20d | 2026-10-21 | 2026-11-12 | SDR-2-CON-TE-ZA-3240, SDR-2-CON-TE-ZA-3290 | 5d |
|  | 4 | **Testting** |  | 2026-11-14 | 2026-11-29 |  |  |
| SDR-2-CON-TE-ZA-3260 |  | Telecom Manhole finishing works | 14d | 2026-11-14 | 2026-11-29 | SDR-2-CON-TE-ZA-3250 | 5d |
|  | 5 | **Backfilling** |  | 2026-12-12 | 2027-01-04 |  |  |
| SDR-2-CON-TE-ZA-3270 |  | Backfilling over Telecom Manhole | 21d | 2026-12-12 | 2027-01-04 | SDR-2-CON-TE-ZA-3260 FS+10d | 5d |
|  | 11 | **TELECOMMUNICATION IN ( PH2-A-MCA0 )** |  | 2026-09-06 | 2027-01-13 |  |  |
|  | 3 | **Ducts** |  | 2026-09-06 | 2026-12-20 |  |  |
|  | 2 | **Excavation** |  | 2026-09-06 | 2026-09-30 |  |  |
| SDR-2-CON-TE-ZA-3300 |  | Excavation for telecom trench | 21d | 2026-09-06 | 2026-09-30 | SDR-2-CON-TE-ZA-3210 SS+3d, SDR-2-CON-SL-ZA-1000 | 4d |
|  | 5 | **Pipe laying** |  | 2026-10-01 | 2026-10-22 |  |  |
| SDR-2-CON-TE-ZA-3310 |  | HDPE Pipes for Telecom Installation | 19d | 2026-10-01 | 2026-10-22 | SDR-2-CON-TE-ZA-3300 | 18d |
|  | 6 | **Backfilling** |  | 2026-10-24 | 2026-11-15 |  |  |
| SDR-2-CON-TE-ZA-3320 |  | Backfilling over HDPE Telecom Pipes | 20d | 2026-10-24 | 2026-11-15 | SDR-2-CON-TE-ZA-3310 | 18d |
|  | 7 | **Pulling Cable** |  | 2026-11-28 | 2026-12-20 |  |  |
| SDR-2-CON-TE-ZA-3370 |  | Pulling Cable | 20d | 2026-11-28 | 2026-12-20 | SDR-2-CON-MV-ZA-1100 FS+5d, SDR-2-CON-TE-ZA-3320 FS+10d | 18d |
|  | 4 | **Manholes** |  | 2026-09-06 | 2027-01-13 |  |  |
|  | 1 | **Excavation** |  | 2026-09-06 | 2026-09-30 |  |  |
| SDR-2-CON-TE-ZA-3330 |  | Excavation for Telecom Manhole | 21d | 2026-09-06 | 2026-09-30 | SDR-2-CON-TE-ZA-3300 SS | 14d |

| ID | WBS | Task | Duration | Start | Finish | Predecessors | Total float |
| --- | --- | --- | --- | --- | --- | --- | --- |
|  | 2 | **Bedding Work** |  | 2026-10-01 | 2026-10-24 |  |  |
| SDR-2-CON-TE-ZA-3380 |  | Sand bedding for Telecom Manhole | 20d | 2026-10-01 | 2026-10-24 | SDR-2-CON-TE-ZA-3330 | 14d |
|  | 3 | **Install Manholes** |  | 2026-10-25 | 2026-11-16 |  |  |
| SDR-2-CON-TE-ZA-3340 |  | Installation of Telecom Manhole | 20d | 2026-10-25 | 2026-11-16 | SDR-2-CON-TE-ZA-3330, SDR-2-CON-TE-ZA-3380 | 14d |
|  | 4 | **Testting** |  | 2026-11-17 | 2026-12-09 |  |  |
| SDR-2-CON-TE-ZA-3350 |  | Telecom Manhole finishing works | 20d | 2026-11-17 | 2026-12-09 | SDR-2-CON-TE-ZA-3340 | 14d |
|  | 5 | **Backfilling** |  | 2026-12-22 | 2027-01-13 |  |  |
| SDR-2-CON-TE-ZA-3360 |  | Backfilling over Telecom Manhole | 20d | 2026-12-22 | 2027-01-13 | SDR-2-CON-TE-ZA-3350 FS+10d | 14d |
|  | 12 | **TELECOMMUNICATION IN ( PH2-A-MCB0 )** |  | 2026-09-12 | 2027-01-21 |  |  |
|  | 3 | **Ducts** |  | 2026-09-12 | 2026-12-29 |  |  |
|  | 2 | **Excavation** |  | 2026-09-12 | 2026-10-06 |  |  |
| SDR-2-CON-TE-ZA-3390 |  | Excavation for telecom trench | 21d | 2026-09-12 | 2026-10-06 | SDR-2-CON-TE-ZA-3300 SS+5d, SDR-2-CON-SL-ZA-1000 | 4d |
|  | 5 | **Pipe laying** |  | 2026-10-07 | 2026-10-31 |  |  |
| SDR-2-CON-TE-ZA-3400 |  | HDPE Pipes for Telecom Installation | 21d | 2026-10-07 | 2026-10-31 | SDR-2-CON-TE-ZA-3390 | 10d |
|  | 6 | **Backfilling** |  | 2026-11-01 | 2026-11-23 |  |  |
| SDR-2-CON-TE-ZA-3410 |  | Backfilling over HDPE Telecom Pipes | 20d | 2026-11-01 | 2026-11-23 | SDR-2-CON-TE-ZA-3400 | 10d |
|  | 7 | **Pulling Cable** |  | 2026-12-06 | 2026-12-29 |  |  |
| SDR-2-CON-TE-ZA-3460 |  | Pulling Cable | 21d | 2026-12-06 | 2026-12-29 | SDR-2-CON-TE-ZA-3410 FS+10d | 10d |
|  | 4 | **Manholes** |  | 2026-09-12 | 2027-01-21 |  |  |
|  | 1 | **Excavation** |  | 2026-09-12 | 2026-10-06 |  |  |
| SDR-2-CON-TE-ZA-3420 |  | Excavation for Telecom Manhole | 21d | 2026-09-12 | 2026-10-06 | SDR-2-CON-TE-ZA-3390 SS | 7d |
|  | 2 | **Bedding Work** |  | 2026-10-07 | 2026-10-29 |  |  |
| SDR-2-CON-TE-ZA-3470 |  | Sand bedding for Telecom Manhole | 20d | 2026-10-07 | 2026-10-29 | SDR-2-CON-TE-ZA-3420 | 7d |
|  | 3 | **Install Manholes** |  | 2026-10-31 | 2026-11-22 |  |  |
| SDR-2-CON-TE-ZA-3430 |  | Installation of Telecom Manhole | 20d | 2026-10-31 | 2026-11-22 | SDR-2-CON-TE-ZA-3420, SDR-2-CON-TE-ZA-3470 | 7d |
|  | 4 | **Testting** |  | 2026-11-23 | 2026-12-16 |  |  |
| SDR-2-CON-TE-ZA-3440 |  | Telecom Manhole finishing works | 21d | 2026-11-23 | 2026-12-16 | SDR-2-CON-TE-ZA-3430 | 7d |
|  | 5 | **Backfilling** |  | 2026-12-29 | 2027-01-21 |  |  |
| SDR-2-CON-TE-ZA-3450 |  | Backfilling over Telecom Manhole | 21d | 2026-12-29 | 2027-01-21 | SDR-2-CON-TE-ZA-4350, SDR-2-CON-TE-ZA-4360, SDR-2-CON-TE-ZA-4260, SDR-2-CON-TE-ZA-4270, SDR-2-CON-MV-ZA-1340, SDR-2-CON-TE-ZA-3440 FS+10d | 7d |
|  | 13 | **TELECOMMUNICATION IN ( PH2-A-MCC0 )** |  | 2026-09-17 | 2027-01-05 |  |  |
|  | 3 | **Ducts** |  | 2026-09-17 | 2027-01-03 |  |  |
|  | 2 | **Excavation** |  | 2026-09-17 | 2026-10-12 |  |  |
| SDR-2-CON-TE-ZA-3480 |  | Excavation for telecom trench | 21d | 2026-09-17 | 2026-10-12 | SDR-2-CON-TE-ZA-3390 SS+5d, SDR-2-CON-SL-ZA-1000 | 4d |
|  | 5 | **Pipe laying** |  | 2026-10-13 | 2026-11-04 |  |  |
| SDR-2-CON-TE-ZA-3490 |  | HDPE Pipes for Telecom Installation | 20d | 2026-10-13 | 2026-11-04 | SDR-2-CON-TE-ZA-3480 | 6d |
|  | 6 | **Backfilling** |  | 2026-11-05 | 2026-11-28 |  |  |
| SDR-2-CON-TE-ZA-3500 |  | Backfilling over HDPE Telecom Pipes | 20d | 2026-11-05 | 2026-11-28 | SDR-2-CON-TE-ZA-3490 | 6d |
|  | 7 | **Pulling Cable** |  | 2026-12-10 | 2027-01-03 |  |  |
| SDR-2-CON-TE-ZA-3550 |  | Pulling Cable | 21d | 2026-12-10 | 2027-01-03 | SDR-2-CON-TE-ZA-3500 FS+10d | 6d |
|  | 4 | **Manholes** |  | 2026-09-17 | 2027-01-05 |  |  |
|  | 1 | **Excavation** |  | 2026-09-17 | 2026-10-12 |  |  |
| SDR-2-CON-TE-ZA-3510 |  | Excavation for Telecom Manhole | 21d | 2026-09-17 | 2026-10-12 | SDR-2-CON-TE-ZA-3480 SS | 4d |
|  | 2 | **Bedding Work** |  | 2026-10-13 | 2026-11-04 |  |  |
| SDR-2-CON-TE-ZA-3560 |  | Sand bedding for Telecom Manhole | 20d | 2026-10-13 | 2026-11-04 | SDR-2-CON-TE-ZA-3510 | 4d |
|  | 3 | **Install Manholes** |  | 2026-11-05 | 2026-11-26 |  |  |
| SDR-2-CON-TE-ZA-3520 |  | Installation of Telecom Manhole | 19d | 2026-11-05 | 2026-11-26 | SDR-2-CON-TE-ZA-3510, SDR-2-CON-TE-ZA-3560 | 4d |
|  | 4 | **Testting** |  | 2026-11-28 | 2026-12-13 |  |  |
| SDR-2-CON-TE-ZA-3530 |  | Telecom Manhole finishing works | 14d | 2026-11-28 | 2026-12-13 | SDR-2-CON-TE-ZA-3520 | 4d |
|  | 5 | **Backfilling** |  | 2026-12-14 | 2027-01-05 |  |  |
| SDR-2-CON-TE-ZA-3540 |  | Backfilling over Telecom Manhole | 20d | 2026-12-14 | 2027-01-05 | SDR-2-CON-TE-ZA-3530 | 4d |
|  | 14 | **TELECOMMUNICATION IN ( PH2-A-MCD0 )** |  | 2026-09-24 | 2027-01-12 |  |  |
|  | 3 | **Ducts** |  | 2026-09-24 | 2026-12-26 |  |  |
|  | 2 | **Excavation** |  | 2026-09-24 | 2026-10-18 |  |  |
| SDR-2-CON-TE-ZA-3570 |  | Excavation for telecom trench | 21d | 2026-09-24 | 2026-10-18 | SDR-2-CON-TE-ZA-3480 SS+5d, SDR-2-CON-SL-ZA-1000 | 5.2d |
|  | 5 | **Pipe laying** |  | 2026-10-19 | 2026-11-10 |  |  |
| SDR-2-CON-TE-ZA-3580 |  | HDPE Pipes for Telecom Installation | 20d | 2026-10-19 | 2026-11-10 | SDR-2-CON-TE-ZA-3570 | 10d |
|  | 6 | **Backfilling** |  | 2026-11-11 | 2026-12-01 |  |  |
| SDR-2-CON-TE-ZA-3590 |  | Backfilling over HDPE Telecom Pipes | 18d | 2026-11-11 | 2026-12-01 | SDR-2-CON-TE-ZA-3580 | 10d |
|  | 7 | **Pulling Cable** |  | 2026-12-02 | 2026-12-26 |  |  |
| SDR-2-CON-TE-ZA-3640 |  | Pulling Cable | 21d | 2026-12-02 | 2026-12-26 | SDR-2-CON-TE-ZA-3590 | 10d |
|  | 4 | **Manholes** |  | 2026-09-24 | 2027-01-12 |  |  |
|  | 1 | **Excavation** |  | 2026-09-24 | 2026-10-18 |  |  |
| SDR-2-CON-TE-ZA-3600 |  | Excavation for Telecom Manhole | 21d | 2026-09-24 | 2026-10-18 | SDR-2-CON-TE-ZA-3570 SS | 16d |
|  | 2 | **Bedding Work** |  | 2026-10-19 | 2026-11-10 |  |  |
| SDR-2-CON-TE-ZA-3650 |  | Sand bedding for Telecom Manhole | 20d | 2026-10-19 | 2026-11-10 | SDR-2-CON-TE-ZA-3600 | 16d |
|  | 3 | **Install Manholes** |  | 2026-11-11 | 2026-12-05 |  |  |
| SDR-2-CON-TE-ZA-3610 |  | Installation of Telecom Manhole | 21d | 2026-11-11 | 2026-12-05 | SDR-2-CON-TE-ZA-3600, SDR-2-CON-TE-ZA-3650 | 16d |
|  | 4 | **Testting** |  | 2026-12-06 | 2026-12-19 |  |  |
| SDR-2-CON-TE-ZA-3620 |  | Telecom Manhole finishing works | 12d | 2026-12-06 | 2026-12-19 | SDR-2-CON-CC-ZG-1610, SDR-2-CON-TE-ZA-3610 | 16d |
|  | 5 | **Backfilling** |  | 2026-12-20 | 2027-01-12 |  |  |

| ID | WBS | Task | Duration | Start | Finish | Predecessors | Total float |
| --- | --- | --- | --- | --- | --- | --- | --- |
| SDR-2-CON-TE-ZA-3630 |  | Backfilling over Telecom Manhole | 21d | 2026-12-20 | 2027-01-12 | SDR-2-CON-TE-ZA-4540, SDR-2-CON-TE-ZA-3620 | 16d |
|  | 5 | **TELECOMMUNICATION IN ( PH2-A-MCE0 )** |  | 2026-09-29 | 2027-01-14 |  |  |
|  | 3 | **Ducts** |  | 2026-09-29 | 2026-12-30 |  |  |
|  | 2 | **Excavation** |  | 2026-09-29 | 2026-10-22 |  |  |
| SDR-2-CON-TE-ZA-3660 |  | Excavation for telecom trench | 21d | 2026-09-29 | 2026-10-22 | SDR-2-CON-TE-ZA-3570 SS+4d, SDR-2-CON-SL-ZA-1000 | 5.2d |
|  | 5 | **Pipe laying** |  | 2026-10-24 | 2026-11-11 |  |  |
| SDR-2-CON-TE-ZA-3670 |  | HDPE Pipes for Telecom Installation | 17d | 2026-10-24 | 2026-11-11 | SDR-2-CON-TE-ZA-3660 | 6d |
|  | 6 | **Backfilling** |  | 2026-11-12 | 2026-12-06 |  |  |
| SDR-2-CON-TE-ZA-3680 |  | Backfilling over HDPE Telecom Pipes | 21d | 2026-11-12 | 2026-12-06 | SDR-2-CON-TE-ZA-3670 | 6d |
|  | 7 | **Pulling Cable** |  | 2026-12-07 | 2026-12-30 |  |  |
| SDR-2-CON-TE-ZA-3730 |  | Pulling Cable | 21d | 2026-12-07 | 2026-12-30 | SDR-2-CON-TE-ZA-3680 | 6d |
|  | 4 | **Manholes** |  | 2026-09-29 | 2027-01-14 |  |  |
|  | 1 | **Excavation** |  | 2026-09-29 | 2026-10-22 |  |  |
| SDR-2-CON-TE-ZA-3690 |  | Excavation for Telecom Manhole | 21d | 2026-09-29 | 2026-10-22 | SDR-2-CON-TE-ZA-3660 SS | 11.2d |
|  | 2 | **Bedding Work** |  | 2026-10-24 | 2026-11-15 |  |  |
| SDR-2-CON-TE-ZA-3740 |  | Sand bedding for Telecom Manhole | 20d | 2026-10-24 | 2026-11-15 | SDR-2-CON-TE-ZA-3690 | 11.2d |
|  | 3 | **Install Manholes** |  | 2026-11-16 | 2026-12-08 |  |  |
| SDR-2-CON-TE-ZA-3700 |  | Installation of Telecom Manhole | 20d | 2026-11-16 | 2026-12-08 | SDR-2-CON-TE-ZA-3690, SDR-2-CON-TE-ZA-3740 | 11.2d |
|  | 4 | **Testting** |  | 2026-12-09 | 2026-12-22 |  |  |
| SDR-2-CON-TE-ZA-3710 |  | Telecom Manhole finishing works | 12d | 2026-12-09 | 2026-12-22 | SDR-2-CON-TE-ZA-3700 | 11.2d |
|  | 5 | **Backfilling** |  | 2026-12-23 | 2027-01-14 |  |  |
| SDR-2-CON-TE-ZA-3720 |  | Backfilling over Telecom Manhole | 20d | 2026-12-23 | 2027-01-14 | SDR-2-CON-TE-ZA-3710 | 11.2d |
|  | 6 | **TELECOMMUNICATION IN ( PH2-A-MCF0 )** |  | 2026-10-03 | 2027-01-19 |  |  |
|  | 3 | **Ducts** |  | 2026-10-03 | 2027-01-05 |  |  |
|  | 2 | **Excavation** |  | 2026-10-03 | 2026-10-26 |  |  |
| SDR-2-CON-TE-ZA-3750 |  | Excavation for telecom trench | 21d | 2026-10-03 | 2026-10-26 | SDR-2-CON-TE-ZA-3660 SS+3d, SDR-2-CON-SL-ZA-1000 | 5.2d |
|  | 5 | **Pipe laying** |  | 2026-10-27 | 2026-11-18 |  |  |
| SDR-2-CON-TE-ZA-3760 |  | HDPE Pipes for Telecom Installation | 20d | 2026-10-27 | 2026-11-18 | SDR-2-CON-TE-ZA-3750 | 19.2d |
|  | 6 | **Backfilling** |  | 2026-11-19 | 2026-12-13 |  |  |
| SDR-2-CON-TE-ZA-3770 |  | Backfilling over HDPE Telecom Pipes | 21d | 2026-11-19 | 2026-12-13 | SDR-2-CON-TE-ZA-3760 | 19.2d |
|  | 7 | **Pulling Cable** |  | 2026-12-14 | 2027-01-05 |  |  |
| SDR-2-CON-TE-ZA-3820 |  | Pulling Cable | 20d | 2026-12-14 | 2027-01-05 | SDR-2-CON-TE-ZA-3770 | 19.2d |
|  | 4 | **Manholes** |  | 2026-10-03 | 2027-01-19 |  |  |
|  | 1 | **Excavation** |  | 2026-10-03 | 2026-10-26 |  |  |
| SDR-2-CON-TE-ZA-3780 |  | Excavation for Telecom Manhole | 21d | 2026-10-03 | 2026-10-26 | SDR-2-CON-TE-ZA-3750 SS | 7.2d |
|  | 2 | **Bedding Work** |  | 2026-10-27 | 2026-11-18 |  |  |
| SDR-2-CON-TE-ZA-3830 |  | Sand bedding for Telecom Manhole | 20d | 2026-10-27 | 2026-11-18 | SDR-2-CON-TE-ZA-3780 | 7.2d |
|  | 3 | **Install Manholes** |  | 2026-11-19 | 2026-12-12 |  |  |
| SDR-2-CON-TE-ZA-3790 |  | Installation of Telecom Manhole | 20d | 2026-11-19 | 2026-12-12 | SDR-2-CON-TE-ZA-3780, SDR-2-CON-TE-ZA-3830 | 7.2d |
|  | 4 | **Testting** |  | 2026-12-13 | 2026-12-26 |  |  |
| SDR-2-CON-TE-ZA-3800 |  | Telecom Manhole finishing works | 12d | 2026-12-13 | 2026-12-26 | SDR-2-CON-TE-ZA-3790 | 7.2d |
|  | 5 | **Backfilling** |  | 2026-12-27 | 2027-01-19 |  |  |
| SDR-2-CON-TE-ZA-3810 |  | Backfilling over Telecom Manhole | 21d | 2026-12-27 | 2027-01-19 | SDR-2-CON-TE-ZA-3800 | 7.2d |
|  | 7 | **TELECOMMUNICATION IN ( PH2-A-MCG0 )** |  | 2026-10-06 | 2027-01-21 |  |  |
|  | 3 | **Ducts** |  | 2026-10-06 | 2027-01-19 |  |  |
|  | 2 | **Excavation** |  | 2026-10-06 | 2026-10-29 |  |  |
| SDR-2-CON-TE-ZA-3840 |  | Excavation for telecom trench | 21d | 2026-10-06 | 2026-10-29 | SDR-2-CON-TE-ZA-3750 SS+3d, SDR-2-CON-SL-ZA-1000 | 5.2d |
|  | 5 | **Pipe laying** |  | 2026-10-31 | 2026-11-22 |  |  |
| SDR-2-CON-TE-ZA-3850 |  | HDPE Pipes for Telecom Installation | 20d | 2026-10-31 | 2026-11-22 | SDR-2-CON-TE-ZA-3840 | 7.2d |
|  | 6 | **Backfilling** |  | 2026-11-23 | 2026-12-15 |  |  |
| SDR-2-CON-TE-ZA-3860 |  | Backfilling over HDPE Telecom Pipes | 20d | 2026-11-23 | 2026-12-15 | SDR-2-CON-TE-ZA-3850 | 7.2d |
|  | 7 | **Pulling Cable** |  | 2026-12-27 | 2027-01-19 |  |  |
| SDR-2-CON-TE-ZA-3910 |  | Pulling Cable | 21d | 2026-12-27 | 2027-01-19 | SDR-2-CON-TE-ZA-3860 FS+9d | 7.2d |
|  | 4 | **Manholes** |  | 2026-10-06 | 2027-01-21 |  |  |
|  | 1 | **Excavation** |  | 2026-10-06 | 2026-10-29 |  |  |
| SDR-2-CON-TE-ZA-3870 |  | Excavation for Telecom Manhole | 21d | 2026-10-06 | 2026-10-29 | SDR-2-CON-TE-ZA-3840 SS | 5.2d |
|  | 2 | **Bedding Work** |  | 2026-10-31 | 2026-11-22 |  |  |
| SDR-2-CON-TE-ZA-3920 |  | Sand bedding for Telecom Manhole | 20d | 2026-10-31 | 2026-11-22 | SDR-2-CON-TE-ZA-3870 | 5.2d |
|  | 3 | **Install Manholes** |  | 2026-11-23 | 2026-12-15 |  |  |
| SDR-2-CON-TE-ZA-3880 |  | Installation of Telecom Manhole | 20d | 2026-11-23 | 2026-12-15 | SDR-2-CON-TE-ZA-3870, SDR-2-CON-TE-ZA-3920 | 5.2d |
|  | 4 | **Testting** |  | 2026-12-16 | 2026-12-29 |  |  |
| SDR-2-CON-TE-ZA-3890 |  | Telecom Manhole finishing works | 12d | 2026-12-16 | 2026-12-29 | SDR-2-CON-TE-ZA-3880 | 5.2d |
|  | 5 | **Backfilling** |  | 2026-12-30 | 2027-01-21 |  |  |
| SDR-2-CON-TE-ZA-3900 |  | Backfilling over Telecom Manhole | 20d | 2026-12-30 | 2027-01-21 | SDR-2-CON-TE-ZA-3890 | 5.2d |
|  | 8 | **TELECOMMUNICATION IN ( PH2-A-MCH0 )** |  | 2026-10-08 | 2027-01-21 |  |  |
|  | 3 | **Ducts** |  | 2026-10-08 | 2027-01-11 |  |  |
|  | 2 | **Excavation** |  | 2026-10-08 | 2026-11-01 |  |  |
| SDR-2-CON-TE-ZA-3930 |  | Excavation for telecom trench | 21d | 2026-10-08 | 2026-11-01 | SDR-2-CON-TE-ZA-3840 SS+2d, SDR-2-CON-SL-ZA-1000 | 5.2d |
|  | 5 | **Pipe laying** |  | 2026-11-02 | 2026-11-24 |  |  |
| SDR-2-CON-TE-ZA-3940 |  | HDPE Pipes for Telecom Installation | 20d | 2026-11-02 | 2026-11-24 | SDR-2-CON-TE-ZA-3930 | 14.2d |

| ID | WBS | Task | Duration | Start | Finish | Predecessors | Total float |
| --- | --- | --- | --- | --- | --- | --- | --- |
|  | 6 | **Backfilling** |  | 2026-11-25 | 2026-12-17 |  |  |
| SDR-2-CON-TE-ZA-3950 |  | Backfilling over HDPE Telecom Pipes | 20d | 2026-11-25 | 2026-12-17 | SDR-2-CON-TE-ZA-3940 | 14.2d |
|  | 7 | **Pulling Cable** |  | 2026-12-19 | 2027-01-11 |  |  |
| SDR-2-CON-TE-ZA-4000 |  | Pulling Cable | 21d | 2026-12-19 | 2027-01-11 | SDR-2-CON-TE-ZA-3950 | 14.2d |
|  | 4 | **Manholes** |  | 2026-10-08 | 2027-01-21 |  |  |
|  | 1 | **Excavation** |  | 2026-10-08 | 2026-11-01 |  |  |
| SDR-2-CON-TE-ZA-3960 |  | Excavation for Telecom Manhole | 21d | 2026-10-08 | 2026-11-01 | SDR-2-CON-TE-ZA-3930 SS | 5.2d |
|  | 2 | **Bedding Work** |  | 2026-11-02 | 2026-11-24 |  |  |
| SDR-2-CON-TE-ZA-4010 |  | Sand bedding for Telecom Manhole | 20d | 2026-11-02 | 2026-11-24 | SDR-2-CON-TE-ZA-3960 | 5.2d |
|  | 3 | **Install Manholes** |  | 2026-11-25 | 2026-12-17 |  |  |
| SDR-2-CON-TE-ZA-3970 |  | Installation of Telecom Manhole | 20d | 2026-11-25 | 2026-12-17 | SDR-2-CON-TE-ZA-3960, SDR-2-CON-TE-ZA-4010 | 5.2d |
|  | 4 | **Testting** |  | 2026-12-19 | 2026-12-31 |  |  |
| SDR-2-CON-TE-ZA-3980 |  | Telecom Manhole finishing works | 12d | 2026-12-19 | 2026-12-31 | SDR-2-CON-TE-ZA-3970 | 5.2d |
|  | 5 | **Backfilling** |  | 2027-01-02 | 2027-01-21 |  |  |
| SDR-2-CON-TE-ZA-3990 |  | Backfilling over Telecom Manhole | 18d | 2027-01-02 | 2027-01-21 | SDR-2-CON-TE-ZA-3980 | 5.2d |
|  | 9 | **TELECOMMUNICATION IN ( PH2-ART-MC00 )** |  | 2026-10-08 | 2027-01-21 |  |  |
|  | 3 | **Ducts** |  | 2026-10-08 | 2027-01-10 |  |  |
|  | 2 | **Excavation** |  | 2026-10-08 | 2026-11-01 |  |  |
| SDR-2-CON-TE-ZA-4020 |  | Excavation for telecom trench | 21d | 2026-10-08 | 2026-11-01 | SDR-2-CON-TE-ZA-3930 SS, SDR-2-CON-SL-ZA-1000 | 5.2d |
|  | 5 | **Pipe laying** |  | 2026-11-02 | 2026-11-24 |  |  |
| SDR-2-CON-TE-ZA-4030 |  | HDPE Pipes for Telecom Installation | 20d | 2026-11-02 | 2026-11-24 | SDR-2-CON-TE-ZA-4020 | 15.2d |
|  | 6 | **Backfilling** |  | 2026-11-25 | 2026-12-16 |  |  |
| SDR-2-CON-TE-ZA-4040 |  | Backfilling over HDPE Telecom Pipes | 19d | 2026-11-25 | 2026-12-16 | SDR-2-CON-TE-ZA-4030 | 15.2d |
|  | 7 | **Pulling Cable** |  | 2026-12-17 | 2027-01-10 |  |  |
| SDR-2-CON-TE-ZA-4090 |  | Pulling Cable | 21d | 2026-12-17 | 2027-01-10 | SDR-2-CON-TE-ZA-4040 | 15.2d |
|  | 4 | **Manholes** |  | 2026-10-08 | 2027-01-21 |  |  |
|  | 1 | **Excavation** |  | 2026-10-08 | 2026-11-01 |  |  |
| SDR-2-CON-TE-ZA-4050 |  | Excavation for Telecom Manhole | 21d | 2026-10-08 | 2026-11-01 | SDR-2-CON-TE-ZA-4020 SS | 5.2d |
|  | 2 | **Bedding Work** |  | 2026-11-02 | 2026-11-24 |  |  |
| SDR-2-CON-TE-ZA-4100 |  | Sand bedding for Telecom Manhole | 20d | 2026-11-02 | 2026-11-24 | SDR-2-CON-TE-ZA-4050 | 5.2d |
|  | 3 | **Install Manholes** |  | 2026-11-25 | 2026-12-17 |  |  |
| SDR-2-CON-TE-ZA-4060 |  | Installation of Telecom Manhole | 20d | 2026-11-25 | 2026-12-17 | SDR-2-CON-TE-ZA-4050, SDR-2-CON-TE-ZA-4100 | 5.2d |
|  | 4 | **Testting** |  | 2026-12-19 | 2026-12-31 |  |  |
| SDR-2-CON-TE-ZA-4070 |  | Telecom Manhole finishing works | 12d | 2026-12-19 | 2026-12-31 | SDR-2-CON-TE-ZA-4060 | 5.2d |
|  | 5 | **Backfilling** |  | 2027-01-02 | 2027-01-21 |  |  |
| SDR-2-CON-TE-ZA-4080 |  | Backfilling over Telecom Manhole | 18d | 2027-01-02 | 2027-01-21 | SDR-2-CON-TE-ZA-4070 | 5.2d |
|  | 10 | **TELECOMMUNICATION IN ( PH2-ART-MC10 )** |  | 2026-10-08 | 2027-01-21 |  |  |
|  | 3 | **Ducts** |  | 2026-10-08 | 2027-01-11 |  |  |
|  | 2 | **Excavation** |  | 2026-10-08 | 2026-11-01 |  |  |
| SDR-2-CON-TE-ZA-4110 |  | Excavation for telecom trench | 21d | 2026-10-08 | 2026-11-01 | SDR-2-CON-TE-ZA-3930 SS, SDR-2-CON-SL-ZA-1000 | 5.2d |
|  | 5 | **Pipe laying** |  | 2026-11-02 | 2026-11-24 |  |  |
| SDR-2-CON-TE-ZA-4120 |  | HDPE Pipes for Telecom Installation | 20d | 2026-11-02 | 2026-11-24 | SDR-2-CON-TE-ZA-4110 | 14.2d |
|  | 6 | **Backfilling** |  | 2026-11-25 | 2026-12-17 |  |  |
| SDR-2-CON-TE-ZA-4130 |  | Backfilling over HDPE Telecom Pipes | 20d | 2026-11-25 | 2026-12-17 | SDR-2-CON-TE-ZA-4120 | 14.2d |
|  | 7 | **Pulling Cable** |  | 2026-12-19 | 2027-01-11 |  |  |
| SDR-2-CON-TE-ZA-4180 |  | Pulling Cable | 21d | 2026-12-19 | 2027-01-11 | SDR-2-CON-TE-ZA-4130 | 14.2d |
|  | 4 | **Manholes** |  | 2026-10-08 | 2027-01-21 |  |  |
|  | 1 | **Excavation** |  | 2026-10-08 | 2026-11-01 |  |  |
| SDR-2-CON-TE-ZA-4140 |  | Excavation for Telecom Manhole | 21d | 2026-10-08 | 2026-11-01 | SDR-2-CON-TE-ZA-4110 SS | 5.2d |
|  | 2 | **Bedding Work** |  | 2026-11-02 | 2026-11-22 |  |  |
| SDR-2-CON-TE-ZA-4190 |  | Sand bedding for Telecom Manhole | 18d | 2026-11-02 | 2026-11-22 | SDR-2-CON-TE-ZA-4140 | 5.2d |
|  | 3 | **Install Manholes** |  | 2026-11-23 | 2026-12-15 |  |  |
| SDR-2-CON-TE-ZA-4150 |  | Installation of Telecom Manhole | 20d | 2026-11-23 | 2026-12-15 | SDR-2-CON-TE-ZA-4140, SDR-2-CON-TE-ZA-4190 | 5.2d |
|  | 4 | **Testting** |  | 2026-12-16 | 2026-12-28 |  |  |
| SDR-2-CON-TE-ZA-4160 |  | Telecom Manhole finishing works | 11d | 2026-12-16 | 2026-12-28 | SDR-2-CON-TE-ZA-4150 | 5.2d |
|  | 5 | **Backfilling** |  | 2026-12-29 | 2027-01-21 |  |  |
| SDR-2-CON-TE-ZA-4170 |  | Backfilling over Telecom Manhole | 21d | 2026-12-29 | 2027-01-21 | SDR-2-CON-TE-ZA-4160 | 5.2d |
|  | ZG | **ZONE G** |  | 2026-08-27 | 2027-01-20 |  |  |
|  | 1 | **Street Lighting Network** |  | 2026-09-12 | 2027-01-20 |  |  |
|  | 5 | **Street Lighting IN ( PH2-G-MCA0 )** |  | 2026-09-30 | 2027-01-12 |  |  |
|  | 10 | **Excavation** |  | 2026-09-30 | 2026-10-24 |  |  |
| SDR-2-CON-SL-ZA-3230 |  | Excavation for LV Cable trench | 21d | 2026-09-30 | 2026-10-24 | SDR-2-CON-SL-ZA-1000, SDR-2-CON-SL-ZA-2950 FS+15d, SDR-2-CON-SL-ZA-3590 | 0d |
|  | 11 | **Install Footings** |  | 2026-10-25 | 2026-11-17 |  |  |
| SDR-2-CON-SL-ZA-3240 |  | Install Footings | 21d | 2026-10-25 | 2026-11-17 | SDR-2-CON-SL-ZA-3230 | 12d |
|  | 12 | **Backfilling** |  | 2026-11-18 | 2026-12-10 |  |  |
| SDR-2-CON-SL-ZA-3260 |  | Backfilling over LV Cables of Street lighting | 20d | 2026-11-18 | 2026-12-10 | SDR-2-CON-SL-ZA-3240 | 12d |
|  | 13 | **Install pole** |  | 2026-12-20 | 2027-01-12 |  |  |
| SDR-2-CON-SL-ZA-3250 |  | Install Pole | 21d | 2026-12-20 | 2027-01-12 | SDR-2-CON-SL-ZA-3240, SDR-2-CON-SL-ZA-3260 FS+7d | 12d |
|  | 6 | **Street Lighting IN ( PH2-G-MCE0 )** |  | 2026-09-12 | 2026-12-29 |  |  |
|  | 10 | **Excavation** |  | 2026-09-12 | 2026-10-06 |  |  |

| ID | WBS | Task | Duration | Start | Finish | Predecessors | Total float |
| --- | --- | --- | --- | --- | --- | --- | --- |
| SDR-2-CON-SL-ZA-3270 |  | Excavation for LV Cable trench | 21d | 2026-09-12 | 2026-10-06 | SDR-2-CON-SL-ZA-2950, SDR-2-CON-SL-ZA-3590 FS+15d | 4d |
|  | 11 | **Install Footings** |  | 2026-10-07 | 2026-10-31 |  |  |
| SDR-2-CON-SL-ZA-3280 |  | Install Footings | 21d | 2026-10-07 | 2026-10-31 | SDR-2-CON-SL-ZA-3270 | 4d |
|  | 12 | **Backfilling** |  | 2026-11-01 | 2026-11-23 |  |  |
| SDR-2-CON-SL-ZA-3300 |  | Backfilling over LV Cables of Street lighting | 20d | 2026-11-01 | 2026-11-23 | SDR-2-CON-SL-ZA-3280 | 4d |
|  | 13 | **Install pole** |  | 2026-12-06 | 2026-12-29 |  |  |
| SDR-2-CON-SL-ZA-3290 |  | Install Pole | 21d | 2026-12-06 | 2026-12-29 | SDR-2-CON-CC-ZG-1610, SDR-2-CON-SL-ZA-3300 FS+10d | 4d |
|  | 7 | **Street Lighting IN ( PH2-G-MCF0 )** |  | 2026-09-30 | 2027-01-14 |  |  |
|  | 10 | **Excavation** |  | 2026-09-30 | 2026-10-24 |  |  |
| SDR-2-CON-SL-ZA-3310 |  | Excavation for LV Cable trench | 21d | 2026-09-30 | 2026-10-24 | SDR-2-CON-SL-ZA-3270 SS+3d, SDR-2-CON-SL-ZA-3230 SS | 0d |
|  | 11 | **Install Footings** |  | 2026-10-25 | 2026-11-16 |  |  |
| SDR-2-CON-SL-ZA-3320 |  | Install Footings | 20d | 2026-10-25 | 2026-11-16 | SDR-2-CON-SL-ZA-3310 | 5d |
|  | 12 | **Backfilling** |  | 2026-11-17 | 2026-12-09 |  |  |
| SDR-2-CON-SL-ZA-3340 |  | Backfilling over LV Cables of Street lighting | 20d | 2026-11-17 | 2026-12-09 | SDR-2-CON-SL-ZA-3320 | 5d |
|  | 13 | **Install pole** |  | 2026-12-22 | 2027-01-14 |  |  |
| SDR-2-CON-SL-ZA-3330 |  | Install Pole | 21d | 2026-12-22 | 2027-01-14 | SDR-2-CON-SL-ZA-3340 FS+10d | 5d |
|  | 4 | **Street Lighting IN ( PH2-G-MCG0 )** |  | 2026-09-30 | 2027-01-14 |  |  |
|  | 10 | **Excavation** |  | 2026-09-30 | 2026-10-24 |  |  |
| SDR-2-CON-SL-ZA-3350 |  | Excavation for LV Cable trench | 21d | 2026-09-30 | 2026-10-24 | SDR-2-CON-SL-ZA-3310 SS | 0d |
|  | 11 | **Install Footings** |  | 2026-10-25 | 2026-11-16 |  |  |
| SDR-2-CON-SL-ZA-3360 |  | Install Footings | 20d | 2026-10-25 | 2026-11-16 | SDR-2-CON-SL-ZA-3350 | 5d |
|  | 12 | **Backfilling** |  | 2026-11-17 | 2026-12-09 |  |  |
| SDR-2-CON-SL-ZA-3380 |  | Backfilling over LV Cables of Street lighting | 20d | 2026-11-17 | 2026-12-09 | SDR-2-CON-SL-ZA-3360 | 5d |
|  | 13 | **Install pole** |  | 2026-12-22 | 2027-01-14 |  |  |
| SDR-2-CON-SL-ZA-3370 |  | Install Pole | 21d | 2026-12-22 | 2027-01-14 | SDR-2-CON-SL-ZA-3380 FS+10d | 5d |
|  | 1 | **Street Lighting IN ( PH2-G-MCZ0 )** |  | 2026-10-04 | 2027-01-20 |  |  |
|  | 10 | **Excavation** |  | 2026-10-04 | 2026-10-27 |  |  |
| SDR-2-CON-SL-ZA-3390 |  | Excavation for LV Cable trench | 21d | 2026-10-04 | 2026-10-27 | SDR-2-CON-SL-ZA-3350 SS+3d | 0d |
|  | 11 | **Install Footings** |  | 2026-10-28 | 2026-11-21 |  |  |
| SDR-2-CON-SL-ZA-3400 |  | Install Footings | 21d | 2026-10-28 | 2026-11-21 | SDR-2-CON-SL-ZA-3390 | 0d |
|  | 12 | **Backfilling** |  | 2026-11-22 | 2026-12-15 |  |  |
| SDR-2-CON-SL-ZA-3420 |  | Backfilling over LV Cables of Street lighting | 21d | 2026-11-22 | 2026-12-15 | SDR-2-CON-SL-ZA-3400 | 0d |
|  | 13 | **Install pole** |  | 2026-12-28 | 2027-01-20 |  |  |
| SDR-2-CON-SL-ZA-3410 |  | Install Pole | 21d | 2026-12-28 | 2027-01-20 | SDR-2-CON-SL-ZA-3420 FS+10d | 0d |
|  | 10 | **Lighting Pole Panels** |  | 2026-10-10 | 2027-01-11 |  |  |
|  | 1 | **Excavation** |  | 2026-10-10 | 2026-11-02 |  |  |
| SDR-2-CON-SL-ZA-3430 |  | Street Lighting Panels Excavation | 21d | 2026-10-10 | 2026-11-02 | SDR-2-CON-SL-ZA-3390 SS+5d | 16d |
|  | 2 | **Install Footings** |  | 2026-11-03 | 2026-11-24 |  |  |
| SDR-2-CON-SL-ZA-3440 |  | Installation Footings Street Lighting Panels | 19d | 2026-11-03 | 2026-11-24 | SDR-2-CON-SL-ZA-3430 | 18d |
|  | 3 | **Backfilling** |  | 2026-11-25 | 2026-12-17 |  |  |
| SDR-2-CON-SL-ZA-3450 |  | Street Lighting Panels Backfilling | 20d | 2026-11-25 | 2026-12-17 | SDR-2-CON-SL-ZA-3440 | 18d |
|  | 4 | **Install pole** |  | 2026-12-19 | 2027-01-11 |  |  |
| SDR-2-CON-SL-ZA-3460 |  | Street Lighting Panels Installation | 21d | 2026-12-19 | 2027-01-11 | SDR-2-CON-SL-ZA-3450 | 18d |
|  | 11 | **Ring Main Unit** |  | 2026-11-03 | 2027-01-06 |  |  |
|  | 1 | **Leveling** |  | 2026-11-03 | 2026-11-25 |  |  |
| SDR-2-CON-SL-ZA-3470 |  | Ring Main Unit leveling | 20d | 2026-11-03 | 2026-11-25 | SDR-2-CON-SL-ZA-3430, SDR-2-CON-SL-ZA-2660 SS | 16d |
|  | 2 | **Lean Concrete** |  | 2026-11-26 | 2026-12-14 |  |  |
| SDR-2-CON-SL-ZA-3480 |  | Ring Main Unit Lean Concrete | 16d | 2026-11-26 | 2026-12-14 | SDR-2-CON-SL-ZA-3470 | 16d |
|  | 3 | **Installation** |  | 2026-12-15 | 2027-01-06 |  |  |
| SDR-2-CON-SL-ZA-3490 |  | Ring Main Unit installation for Street Lighting | 20d | 2026-12-15 | 2027-01-06 | SDR-2-CON-SL-ZA-3480 | 16d |
|  | 12 | **Feeder Pillars** |  | 2026-09-12 | 2026-11-21 |  |  |
|  | 1 | **Leveling** |  | 2026-09-12 | 2026-10-05 |  |  |
| SDR-2-CON-SL-ZA-3500 |  | Feeder Pillars Leveling | 20d | 2026-09-12 | 2026-10-05 | SDR-2-CON-SL-ZA-2670 SS | 11d |
|  | 2 | **Lean Concrete** |  | 2026-10-06 | 2026-10-28 |  |  |
| SDR-2-CON-SL-ZA-3510 |  | Feeder Pillars Lean Concrete | 20d | 2026-10-06 | 2026-10-28 | SDR-2-CON-SL-ZA-3500 | 11d |
|  | 3 | **Installation** |  | 2026-10-29 | 2026-11-21 |  |  |
| SDR-2-CON-SL-ZA-3520 |  | Feeder Pillars Installation | 20d | 2026-10-29 | 2026-11-21 | SDR-2-CON-SL-ZA-3510 | 11d |
|  | 13 | **KWH Frame** |  | 2026-09-13 | 2026-11-22 |  |  |
|  | 1 | **Leveling** |  | 2026-09-13 | 2026-10-06 |  |  |
| SDR-2-CON-SL-ZA-3530 |  | KWH meter mounting frame Leveling | 20d | 2026-09-13 | 2026-10-06 | SDR-2-CON-SL-ZA-2680 SS | 10d |
|  | 2 | **Lean Concrete** |  | 2026-10-07 | 2026-10-29 |  |  |
| SDR-2-CON-SL-ZA-3540 |  | KWH meter mounting frame Lean Concrete | 20d | 2026-10-07 | 2026-10-29 | SDR-2-CON-SL-ZA-3530 | 10d |
|  | 3 | **Installation** |  | 2026-10-31 | 2026-11-22 |  |  |
| SDR-2-CON-SL-ZA-3550 |  | KWH meter mounting frame installation | 20d | 2026-10-31 | 2026-11-22 | SDR-2-CON-SL-ZA-3540 | 10d |
|  | 14 | **Street Lighting Sub-station** |  | 2026-09-14 | 2026-12-03 |  |  |
|  | 1 | **Leveling** |  | 2026-09-14 | 2026-10-07 |  |  |
| SDR-2-CON-SL-ZA-3560 |  | Unit Substation Leveling | 20d | 2026-09-14 | 2026-10-07 | SDR-2-CON-SL-ZA-2690 SS | 18d |
|  | 2 | **Lean Concrete** |  | 2026-10-08 | 2026-10-29 |  |  |
| SDR-2-CON-SL-ZA-3570 |  | Unit Substation Lean Concrete | 19d | 2026-10-08 | 2026-10-29 | SDR-2-CON-SL-ZA-3560 | 18d |
|  | 3 | **Installation** |  | 2026-11-11 | 2026-12-03 |  |  |

| ID | WBS | Task | Duration | Start | Finish | Predecessors | Total float |
| --- | --- | --- | --- | --- | --- | --- | --- |
| SDR-2-CON-SL-ZA-3580 |  | Unit Substation Install for Street Lighting | 20d | 2026-11-11 | 2026-12-03 | SDR-2-CON-SL-ZA-3570 FS+10d | 18d |
|  | 2 | **MV Network** |  | 2026-08-27 | 2026-12-12 |  |  |
|  | 1 | **LOOP 1** |  | 2026-08-27 | 2026-12-03 |  |  |
|  | 6 | **Excavation** |  | 2026-08-27 | 2026-09-20 |  |  |
| SDR-2-CON-MV-ZA-1280 |  | Excavation Works | 21d | 2026-08-27 | 2026-09-20 | SDR-2-CON-SL-ZA-1000 | 7d |
|  | 7 | **Pipe laying** |  | 2026-09-21 | 2026-10-15 |  |  |
| SDR-2-CON-MV-ZA-1290 |  | Pipe Laying | 21d | 2026-09-21 | 2026-10-15 | SDR-2-CON-MV-ZA-1280 | 7d |
|  | 8 | **Backfilling** |  | 2026-10-17 | 2026-10-29 |  |  |
| SDR-2-CON-MV-ZA-1310 |  | Backfilling Works | 12d | 2026-10-17 | 2026-10-29 | SDR-2-CON-MV-ZA-1290 | 7d |
|  | 9 | **Pulling Cable** |  | 2026-11-11 | 2026-12-03 |  |  |
| SDR-2-CON-MV-ZA-1300 |  | Pulling Cable | 20d | 2026-11-11 | 2026-12-03 | SDR-2-CON-MV-ZA-1290, SDR-2-CON-MV-ZA-1310 FS+10d | 7d |
|  | 2 | **LOOP 2** |  | 2026-08-27 | 2026-12-12 |  |  |
|  | 6 | **Excavation** |  | 2026-08-27 | 2026-09-20 |  |  |
| SDR-2-CON-MV-ZA-1320 |  | Excavation Works | 21d | 2026-08-27 | 2026-09-20 | SDR-2-CON-MV-ZA-1280 SS | 21d |
|  | 7 | **Pipe laying** |  | 2026-09-21 | 2026-10-14 |  |  |
| SDR-2-CON-MV-ZA-1330 |  | Pipe Laying | 20d | 2026-09-21 | 2026-10-14 | SDR-2-CON-MV-ZA-1320 | 21d |
|  | 8 | **Backfilling** |  | 2026-10-15 | 2026-11-07 |  |  |
| SDR-2-CON-MV-ZA-1350 |  | Backfilling Works | 20d | 2026-10-15 | 2026-11-07 | SDR-2-CON-MV-ZA-1330 | 21d |
|  | 9 | **Pulling Cable** |  | 2026-11-19 | 2026-12-12 |  |  |
| SDR-2-CON-MV-ZA-1340 |  | Pulling Cable | 20d | 2026-11-19 | 2026-12-12 | SDR-2-CON-MV-ZA-1330, SDR-2-CON-MV-ZA-1350 FS+10d | 21d |
|  | 3 | **TELECOMMUNICATIONS Works** |  | 2026-09-14 | 2027-01-18 |  |  |
|  | 5 | **TELECOMMUNICATION IN ( PH2-G-MCA0 )** |  | 2026-09-14 | 2026-12-21 |  |  |
|  | 3 | **Ducts** |  | 2026-09-14 | 2026-12-15 |  |  |
|  | 2 | **Excavation** |  | 2026-09-14 | 2026-10-08 |  |  |
| SDR-2-CON-TE-ZA-4200 |  | Excavation for telecom trench | 21d | 2026-09-14 | 2026-10-08 | SDR-2-CON-SL-ZA-1000 FS+15d | 13d |
|  | 5 | **Pipe laying** |  | 2026-10-10 | 2026-10-29 |  |  |
| SDR-2-CON-TE-ZA-4210 |  | HDPE Pipes for Telecom Installation | 18d | 2026-10-10 | 2026-10-29 | SDR-2-CON-TE-ZA-4200 | 18d |
|  | 6 | **Backfilling** |  | 2026-10-31 | 2026-11-22 |  |  |
| SDR-2-CON-TE-ZA-4220 |  | Backfilling over HDPE Telecom Pipes | 20d | 2026-10-31 | 2026-11-22 | SDR-2-CON-TE-ZA-4210 | 18d |
|  | 7 | **Pulling Cable** |  | 2026-11-23 | 2026-12-15 |  |  |
| SDR-2-CON-TE-ZA-4270 |  | Pulling Cable | 20d | 2026-11-23 | 2026-12-15 | SDR-2-CON-TE-ZA-4220 | 18d |
|  | 4 | **Manholes** |  | 2026-09-14 | 2026-12-21 |  |  |
|  | 1 | **Excavation** |  | 2026-09-14 | 2026-10-08 |  |  |
| SDR-2-CON-TE-ZA-4230 |  | Excavation for Telecom Manhole | 21d | 2026-09-14 | 2026-10-08 | SDR-2-CON-TE-ZA-4200 SS | 13d |
|  | 2 | **Bedding Work** |  | 2026-10-10 | 2026-10-28 |  |  |
| SDR-2-CON-TE-ZA-4280 |  | Sand bedding for Telecom Manhole | 17d | 2026-10-10 | 2026-10-28 | SDR-2-CON-TE-ZA-4230 | 13d |
|  | 3 | **Install Manholes** |  | 2026-10-29 | 2026-11-19 |  |  |
| SDR-2-CON-TE-ZA-4240 |  | Installation of Telecom Manhole | 19d | 2026-10-29 | 2026-11-19 | SDR-2-CON-TE-ZA-4230, SDR-2-CON-TE-ZA-4280 | 13d |
|  | 4 | **Testting** |  | 2026-11-21 | 2026-11-28 |  |  |
| SDR-2-CON-TE-ZA-4250 |  | Telecom Manhole finishing works | 7d | 2026-11-21 | 2026-11-28 | SDR-2-CON-TE-ZA-4240 | 13d |
|  | 5 | **Backfilling** |  | 2026-11-29 | 2026-12-21 |  |  |
| SDR-2-CON-TE-ZA-4260 |  | Backfilling over Telecom Manhole | 20d | 2026-11-29 | 2026-12-21 | SDR-2-CON-TE-ZA-4250 | 13d |
|  | 6 | **TELECOMMUNICATION IN ( PH2-G-MCE0 )** |  | 2026-09-14 | 2026-12-20 |  |  |
|  | 3 | **Ducts** |  | 2026-09-14 | 2026-12-17 |  |  |
|  | 2 | **Excavation** |  | 2026-09-14 | 2026-10-08 |  |  |
| SDR-2-CON-TE-ZA-4290 |  | Excavation for telecom trench | 21d | 2026-09-14 | 2026-10-08 | SDR-2-CON-SL-ZA-1000 FS+15d | 11d |
|  | 5 | **Pipe laying** |  | 2026-10-10 | 2026-11-01 |  |  |
| SDR-2-CON-TE-ZA-4300 |  | HDPE Pipes for Telecom Installation | 20d | 2026-10-10 | 2026-11-01 | SDR-2-CON-TE-ZA-4290 | 16d |
|  | 6 | **Backfilling** |  | 2026-11-02 | 2026-11-24 |  |  |
| SDR-2-CON-TE-ZA-4310 |  | Backfilling over HDPE Telecom Pipes | 20d | 2026-11-02 | 2026-11-24 | SDR-2-CON-TE-ZA-4300 | 16d |
|  | 7 | **Pulling Cable** |  | 2026-11-25 | 2026-12-17 |  |  |
| SDR-2-CON-TE-ZA-4360 |  | Pulling Cable | 20d | 2026-11-25 | 2026-12-17 | SDR-2-CON-TE-ZA-4310 | 16d |
|  | 4 | **Manholes** |  | 2026-09-14 | 2026-12-20 |  |  |
|  | 1 | **Excavation** |  | 2026-09-14 | 2026-10-08 |  |  |
| SDR-2-CON-TE-ZA-4320 |  | Excavation for Telecom Manhole | 21d | 2026-09-14 | 2026-10-08 | SDR-2-CON-TE-ZA-4290 SS | 11d |
|  | 2 | **Bedding Work** |  | 2026-10-10 | 2026-10-26 |  |  |
| SDR-2-CON-TE-ZA-4370 |  | Sand bedding for Telecom Manhole | 15d | 2026-10-10 | 2026-10-26 | SDR-2-CON-TE-ZA-4320 | 14d |
|  | 3 | **Install Manholes** |  | 2026-10-27 | 2026-11-17 |  |  |
| SDR-2-CON-TE-ZA-4330 |  | Installation of Telecom Manhole | 19d | 2026-10-27 | 2026-11-17 | SDR-2-CON-TE-ZA-4320, SDR-2-CON-TE-ZA-4370 | 14d |
|  | 4 | **Testting** |  | 2026-11-18 | 2026-11-25 |  |  |
| SDR-2-CON-TE-ZA-4340 |  | Telecom Manhole finishing works | 7d | 2026-11-18 | 2026-11-25 | SDR-2-CON-TE-ZA-4330 | 14d |
|  | 5 | **Backfilling** |  | 2026-11-26 | 2026-12-20 |  |  |
| SDR-2-CON-TE-ZA-4350 |  | Backfilling over Telecom Manhole | 21d | 2026-11-26 | 2026-12-20 | SDR-2-CON-TE-ZA-4340 | 14d |
|  | 7 | **TELECOMMUNICATION IN ( PH2-G-MCF0 )** |  | 2026-10-10 | 2027-01-18 |  |  |
|  | 3 | **Ducts** |  | 2026-10-10 | 2027-01-11 |  |  |
|  | 2 | **Excavation** |  | 2026-10-10 | 2026-11-02 |  |  |
| SDR-2-CON-TE-ZA-4380 |  | Excavation for telecom trench | 21d | 2026-10-10 | 2026-11-02 | SDR-2-CON-TE-ZA-4320, SDR-2-CON-SL-ZA-1000 | 11d |
|  | 5 | **Pipe laying** |  | 2026-11-03 | 2026-11-24 |  |  |
| SDR-2-CON-TE-ZA-4390 |  | HDPE Pipes for Telecom Installation | 19d | 2026-11-03 | 2026-11-24 | SDR-2-CON-TE-ZA-4380 | 17d |
|  | 6 | **Backfilling** |  | 2026-11-25 | 2026-12-17 |  |  |

| ID | WBS | Task | Duration | Start | Finish | Predecessors | Total float |
| --- | --- | --- | --- | --- | --- | --- | --- |
| SDR-2-CON-TE-ZA-4400 |  | Backfilling over HDPE Telecom Pipes | 20d | 2026-11-25 | 2026-12-17 | SDR-2-CON-TE-ZA-4390 | 17d |
|  | 7 | **Pulling Cable** |  | 2026-12-19 | 2027-01-11 |  |  |
| SDR-2-CON-TE-ZA-4450 |  | Pulling Cable | 21d | 2026-12-19 | 2027-01-11 | SDR-2-CON-TE-ZA-4400 | 17d |
|  | 4 | **Manholes** |  | 2026-10-10 | 2027-01-18 |  |  |
|  | 1 | **Excavation** |  | 2026-10-10 | 2026-11-02 |  |  |
| SDR-2-CON-TE-ZA-4410 |  | Excavation for Telecom Manhole | 21d | 2026-10-10 | 2026-11-02 | SDR-2-CON-TE-ZA-4380 SS | 11d |
|  | 2 | **Bedding Work** |  | 2026-11-03 | 2026-11-25 |  |  |
| SDR-2-CON-TE-ZA-4460 |  | Sand bedding for Telecom Manhole | 20d | 2026-11-03 | 2026-11-25 | SDR-2-CON-TE-ZA-4410 | 11d |
|  | 3 | **Install Manholes** |  | 2026-11-26 | 2026-12-17 |  |  |
| SDR-2-CON-TE-ZA-4420 |  | Installation of Telecom Manhole | 19d | 2026-11-26 | 2026-12-17 | SDR-2-CON-TE-ZA-4410, SDR-2-CON-TE-ZA-4460 | 11d |
|  | 4 | **Testting** |  | 2026-12-19 | 2026-12-26 |  |  |
| SDR-2-CON-TE-ZA-4430 |  | Telecom Manhole finishing works | 7d | 2026-12-19 | 2026-12-26 | SDR-2-CON-TE-ZA-4420 | 11d |
|  | 5 | **Backfilling** |  | 2026-12-27 | 2027-01-18 |  |  |
| SDR-2-CON-TE-ZA-4440 |  | Backfilling over Telecom Manhole | 20d | 2026-12-27 | 2027-01-18 | SDR-2-CON-TE-ZA-4430 | 11d |
|  | 4 | **TELECOMMUNICATION IN ( PH2-G-MCG0 )** |  | 2026-09-14 | 2027-01-02 |  |  |
|  | 3 | **Ducts** |  | 2026-09-14 | 2026-12-15 |  |  |
|  | 2 | **Excavation** |  | 2026-09-14 | 2026-10-08 |  |  |
| SDR-2-CON-TE-ZA-4470 |  | Excavation for telecom trench | 21d | 2026-09-14 | 2026-10-08 | SDR-2-CON-SL-ZA-1000 FS+15d | 4d |
|  | 5 | **Pipe laying** |  | 2026-10-10 | 2026-10-29 |  |  |
| SDR-2-CON-TE-ZA-4480 |  | HDPE Pipes for Telecom Installation | 18d | 2026-10-10 | 2026-10-29 | SDR-2-CON-TE-ZA-4470 | 19d |
|  | 6 | **Backfilling** |  | 2026-10-31 | 2026-11-22 |  |  |
| SDR-2-CON-TE-ZA-4490 |  | Backfilling over HDPE Telecom Pipes | 20d | 2026-10-31 | 2026-11-22 | SDR-2-CON-TE-ZA-4480 | 19d |
|  | 7 | **Pulling Cable** |  | 2026-11-23 | 2026-12-15 |  |  |
| SDR-2-CON-TE-ZA-4540 |  | Pulling Cable | 20d | 2026-11-23 | 2026-12-15 | SDR-2-CON-TE-ZA-4490 | 19d |
|  | 4 | **Manholes** |  | 2026-09-14 | 2027-01-02 |  |  |
|  | 1 | **Excavation** |  | 2026-09-14 | 2026-10-08 |  |  |
| SDR-2-CON-TE-ZA-4500 |  | Excavation for Telecom Manhole | 21d | 2026-09-14 | 2026-10-08 | SDR-2-CON-TE-ZA-4470 SS | 4d |
|  | 2 | **Bedding Work** |  | 2026-10-10 | 2026-10-26 |  |  |
| SDR-2-CON-TE-ZA-4550 |  | Sand bedding for Telecom Manhole | 15d | 2026-10-10 | 2026-10-26 | SDR-2-CON-TE-ZA-4500 | 4d |
|  | 3 | **Install Manholes** |  | 2026-10-27 | 2026-11-18 |  |  |
| SDR-2-CON-TE-ZA-4510 |  | Installation of Telecom Manhole | 20d | 2026-10-27 | 2026-11-18 | SDR-2-CON-TE-ZA-4500, SDR-2-CON-TE-ZA-4550 | 4d |
|  | 4 | **Testting** |  | 2026-11-19 | 2026-11-26 |  |  |
| SDR-2-CON-TE-ZA-4520 |  | Telecom Manhole finishing works | 7d | 2026-11-19 | 2026-11-26 | SDR-2-CON-TE-ZA-4510 | 4d |
|  | 5 | **Backfilling** |  | 2026-12-09 | 2027-01-02 |  |  |
| SDR-2-CON-TE-ZA-4530 |  | Backfilling over Telecom Manhole | 21d | 2026-12-09 | 2027-01-02 | SDR-2-CON-TE-ZA-4520 FS+10d | 4d |
|  | LI | **Landscape & Irrigation Works** |  | 2027-05-08 | 2027-07-05 |  |  |
|  | ZA | **ZONE A** |  | 2027-05-08 | 2027-07-05 |  |  |
|  | 2 | **IRRIGATION WORKS** |  | 2027-05-08 | 2027-07-05 |  |  |
|  | 1 | **IRRIGATION WORKS IN ( PH2-COL-MC10 )** |  | 2027-05-08 | 2027-07-05 |  |  |
|  | 7 | **Pre install** |  | 2027-05-08 | 2027-06-03 |  |  |
| SDR-2-CON-IR-ZA-1000 |  | Pre Install for irrigation Works | 19d | 2027-05-08 | 2027-06-03 | SDR-2-MILS-1050, SDR-2-CON-ST-ZA-5970, SDR-2-CON-ST-ZA-5220, SDR-2-CON-ST-ZA-4020 SS, SDR-2-CON-SE-ZA-1000, SDR-2-CON-SE-ZA-1420, SDR-2-CON-SE-ZA-1010, SDR-2-CON-SE-ZA-1020, SDR-2-CON-SE-ZA-1430, SDR-2-CON-SE-ZA-1030, SDR-2-CON-SE-ZA-1450, SDR-2-CON-SE-ZA-1040, SDR-2-CON-SE-ZA-1050, SDR-2-CON-SE-ZA-1440, SDR-2-CON-SE-ZA-1460, SDR-2-CON-SE-ZA-1520, SDR-2-CON-SE-ZA-1470, SDR-2-CON-SE-ZA-1480, SDR-2-CON-SE-ZA-1530, SDR-2-CON-SE-ZA-1490, SDR-2-CON-SE-ZA-1550, SDR-2-CON-SE-ZA-1500, SDR-2-CON-SE-ZA-1510, SDR-2-CON-SE-ZA-1540, SDR-2-CON-SE-ZA-1560, SDR-2-CON-SE-ZA-1620, SDR-2-CON-SE-ZA-1570, SDR-2-CON-SE-ZA-1580, SDR-2-CON-SE-ZA-1630, SDR-2-CON-SE-ZA-1590, SDR-2-CON-SE-ZA-1650, SDR-2-CON-SE-ZA-1600, SDR-2-CON-SE-ZA-1610, SDR-2-CON-SE-ZA-1660, SDR-2-CON-SE-ZA-1720, SDR-2-CON-SE-ZA-1670, SDR-2-CON-SE-ZA-1680, SDR-2-CON-SE-ZA-1730, SDR-2-CON-SE-ZA-1690, SDR-2-CON-SE-ZA-1750, SDR-2-CON-SE-ZA-1700, SDR-2-CON-SE-ZA-1710, SDR-2-CON-SE-ZA-1740, SDR-2-CON-SE-ZA-1760, SDR-2-CON-SE-ZA-1820, SDR-2-CON-SE-ZA-1770, SDR-2-CON-SE-ZA-1780, SDR-2-CON-SE-ZA-1830, SDR-2-CON-SE-ZA-1790, SDR-2-CON-SE-ZA-1850, SDR-2-CON-SE-ZA-1800, SDR-2-CON-SE-ZA-1810, SDR-2-CON-SE-ZA-1840, SDR-2-CON-SE-ZA-1860, SDR-2-CON-SE-ZA-1920, SDR-2-CON-SE-ZA-1870, SDR-2-CON-SE-ZA-1880, SDR-2-CON-SE-ZA-1930, SDR-2-CON-SE-ZA-1890, SDR-2-CON-SE-ZA-1950, SDR-2-CON-SE-ZA-1900, SDR-2-CON-SE-ZA-1910, SDR-2-CON-SE-ZA-1940, SDR-2-CON-SE-ZA-1960, SDR-2-CON-SE-ZA-2020, SDR-2-CON-SE-ZA-1970, SDR-2-CON-SE-ZA-1980, SDR-2-CON-SE-ZA-2030, SDR-2-CON-SE-ZA-1990, SDR-2-CON-SE-ZA-2050, SDR-2-CON-SE-ZA-2000, SDR-2-CON-SE-ZA-2010, SDR-2-CON-SE-ZA-2040, SDR-2-CON-SE-ZA-2060, SDR-2-CON-SE-ZA-2120, SDR-2-CON-SE-ZA-2070, SDR-2-CON-SE-ZA-2080, SDR-2-CON-SE-ZA-2130, SDR-2-CON-SE-ZA-2090, SDR-2-CON-SE-ZA-2150, SDR-2-CON-SE-ZA-2100, SDR-2-CON-SE-ZA-2110, SDR-2-CON-SE-ZA-2140, SDR-2-CON-SE-ZA-2160, SDR-2-CON-SE-ZA-2220, SDR-2-CON-SE-ZA-2170, SDR-2-CON-SE-ZA-2180, SDR-2-CON-SE-ZA-2230, SDR-2-CON-SE-ZA-2190, SDR-2-CON-SE-ZA-2250, SDR-2-CON-SE-ZA-2200, SDR-2-CON-SE-ZA-2210, SDR-2-CON-SE-ZA-2240, SDR-2-CON-SE-ZA-2260, SDR-2-CON-SE-ZA-2320, SDR-2-CON-SE-ZA-2270, SDR-2-CON-SE-ZA-2280, SDR-2-CON-SE-ZA-2330, SDR-2-CON-SE-ZA-2290, SDR-2-CON-SE-ZA-2350, SDR-2-CON-SE-ZA-2300, SDR-2-CON-SE-ZA-2310, SDR-2-CON-SE-ZA-2340, SDR-2-CON-SE-ZA-2360, SDR-2-CON-SE-ZA-2420, SDR-2-CON-SE-ZA-2370, SDR-2-CON-SE-ZA-2380, SDR-2-CON-SE-ZA-2430, SDR-2-CON-SE-ZA-2390, SDR-2-CON-SE-ZA-2450, SDR-2-CON-SE-ZA-2400, SDR-2-CON-SE-ZA-2410, SDR-2-CON-SE-ZA-2440, SDR-2-CON-TS-ZA-1000, SDR-2-CON-TS-ZA-1900, SDR-2-CON-TS-ZA-1010, SDR-2-CON-TS-ZA-1080, SDR-2-CON-TS-ZA-1910, SDR-2-CON-TS-ZA-1040, SDR-2-CON-TS-ZA-1020, SDR-2-CON-TS-ZA-1050, SDR-2-CON-TS-ZA-1060, SDR-2-CON-TS-ZA-1070, SDR-2-CON-TS-ZA-2200, SDR-2-CON-TS-ZA-2280, SDR-2-CON-TS-ZA-2210, SDR-2-CON-TS-ZA-2270, SDR-2-CON-TS-ZA-2290, SDR-2-CON-TS-ZA-2230, SDR-2-CON-TS-ZA-2220, SDR-2-CON-TS-ZA-2240, SDR-2-CON-TS-ZA-2250, SDR-2-CON-TS-ZA-2260, SDR-2-CON-TS-ZA-1180, SDR-2-CON-TS-ZA-1920, SDR-2-CON-TS-ZA-1190, SDR-2-CON-TS-ZA-1260, SDR-2-CON-TS-ZA-1930, SDR-2-CON-TS-ZA-2010, SDR-2-CON-TS-ZA-2000, SDR-2-CON-TS-ZA-2020, SDR-2-CON-TS-ZA-2030, SDR-2-CON-TS-ZA-2040, SDR-2-CON-TS-ZA-1270, SDR-2-CON-TS-ZA-1940, SDR-2-CON-TS-ZA-1280, SDR-2-CON-TS-ZA-1350, SDR-2-CON-TS-ZA-1950, SDR-2-CON-TS-ZA-2060, SDR-2-CON-TS-ZA-2050, SDR-2-CON-TS-ZA-2070, SDR-2-CON-TS-ZA-2080, SDR-2-CON-TS-ZA-2090, SDR-2-CON-TS-ZA-2600, SDR-2-CON-TS-ZA-2630, SDR-2-CON-TS-ZA-2610, SDR-2-CON-TS-ZA-2620, SDR-2-CON-TS-ZA-2640, SDR-2-CON-TS-ZA-2660, SDR-2-CON-TS-ZA-2650, SDR-2-CON-TS-ZA-2670, SDR-2-CON-TS-ZA-2680, SDR-2-CON-TS-ZA-2690, SDR-2-CON-TS-ZA-2700, SDR-2-CON-TS-ZA-2730, SDR-2-CON-TS-ZA-2710, SDR-2-CON-TS-ZA-2720, SDR-2-CON-TS-ZA-2740, SDR-2-CON-TS-ZA-2760, SDR-2-CON-TS-ZA-2750, SDR-2-CON-TS-ZA-2770, SDR-2-CON-TS-ZA-2780, SDR-2-CON-TS-ZA-2790, SDR-2-CON-TS-ZA-2800, SDR-2-CON-TS-ZA-2830, SDR-2-CON-TS-ZA-2810, SDR-2-CON-TS-ZA-2820, SDR-2-CON-TS-ZA-2840, SDR-2-CON-TS-ZA-2860, SDR-2-CON-TS-ZA-2850, SDR-2-CON-TS-ZA-2870, SDR-2-CON-TS-ZA-2880, SDR-2-CON-TS-ZA-2890, SDR-2-CON-TS-ZA-1630, SDR-2-CON-TS-ZA-1960, SDR-2-CON-TS-ZA-1640, SDR-2-CON-TS-ZA-1710, SDR-2-CON-TS-ZA-1970, SDR-2-CON-TS-ZA-2110, SDR-2-CON-TS-ZA-2100, SDR-2-CON-TS-ZA-2120, SDR-2-CON-TS-ZA-2130, SDR-2-CON-TS-ZA-2140, SDR-2-CON-TS-ZA-1720, SDR-2-CON-TS-ZA-1980, SDR-2-CON-TS-ZA-1730, SDR-2-CON-TS-ZA-1800, SDR-2-CON-TS-ZA-1990, SDR-2-CON-TS-ZA-2160, SDR-2-CON-TS-ZA-2150, SDR-2-CON-TS-ZA-2170, SDR-2-CON-TS-ZA-2180, SDR-2-CON-TS-ZA-2190, SDR-2-CON-TS-ZA-3100, SDR-2-CON-TS-ZA-3130, SDR-2-CON-TS-ZA-3110, SDR-2-CON-TS-ZA-3120, SDR-2-CON-TS-ZA-3140, SDR-2-CON-TS-ZA-3160, SDR-2-CON-TS-ZA-3150, SDR-2-CON-TS-ZA-3170, SDR-2-CON-TS-ZA-3180, SDR-2-CON-TS-ZA-3190, SDR-2-CON-TS-ZA-2300, SDR-2-CON-TS-ZA-2380, SDR-2-CON-TS-ZA-2310, SDR-2-CON-TS-ZA-2370, SDR-2-CON-TS-ZA-2390, SDR-2-CON-TS-ZA-2330, SDR-2-CON-TS-ZA-2320, SDR-2-CON-TS-ZA-2340, SDR-2-CON-TS-ZA-2350, SDR-2-CON-TS-ZA-2360, SDR-2-CON-TS-ZA-2400, SDR-2-CON-TS-ZA-2430, SDR-2-CON-TS-ZA-2410, SDR-2-CON-TS-ZA-2420, SDR-2-CON-TS-ZA-2440, SDR-2-CON-TS-ZA-2460, SDR-2-CON-TS-ZA-2450, SDR-2-CON-TS-ZA-2470, SDR-2-CON-TS-ZA-2480, SDR-2-CON-TS-ZA-2490, SDR-2-CON-TS-ZA-2900, SDR-2-CON-TS-ZA-2930, SDR-2-CON-TS-ZA-2910, SDR-2-CON-TS-ZA-2920, SDR-2-CON-TS-ZA-2940, SDR-2-CON-TS-ZA-2960, SDR-2-CON-TS-ZA-2950, SDR-2-CON-TS-ZA-2970, SDR-2-CON-TS-ZA-2980, SDR-2-CON-TS-ZA-2990, SDR-2-CON-TS-ZA-3000, SDR-2-CON-TS-ZA-3030, SDR-2-CON-TS-ZA-3010, SDR-2-CON-TS-ZA-3020, SDR-2-CON-TS-ZA-3040, SDR-2-CON-TS-ZA-3060, SDR-2-CON-TS-ZA-3050, SDR-2-CON-TS-ZA-3070, SDR-2-CON-TS-ZA-3080, SDR-2-CON-TS-ZA-3090, SDR-2-CON-TS-ZA-2500, SDR-2-CON-TS-ZA-2530, SDR-2-CON-TS-ZA-2510, SDR-2-CON-TS-ZA-2520, SDR-2-CON-TS-ZA-2540 SS, SDR-2-CON-TS-ZA-2560, SDR-2-CON-TS-ZA-2550, SDR-2-CON-TS-ZA-2570, SDR-2-CON-TS-ZA-2580, SDR-2-CON-TS-ZA-2590, SDR-2-CON-PW-ZA-1000, SDR-2-CON-PW-ZA-2200, SDR-2-CON-PW-ZA-1010, SDR-2-CON-PW-ZA-1080, SDR-2-CON-PW-ZA-2210 SS, SDR-2-CON-PW-ZA-1040, SDR-2-CON-PW-ZA-1020, SDR-2-CON-PW-ZA-1050, SDR-2-CON-PW-ZA-1030, SDR-2-CON-PW-ZA-1070, SDR-2-CON-PW-ZA-2260, SDR-2-CON-PW-ZA-2340, SDR-2-CON-PW-ZA-2270, SDR-2-CON-PW-ZA-2330, SDR-2-CON-PW-ZA-2350 SS, SDR-2-CON-PW-ZA-2300, SDR-2-CON-PW-ZA-2280, SDR-2-CON-PW-ZA-2310, SDR-2-CON-PW-ZA-2290, SDR-2-CON-PW-ZA-1200, SDR-2-CON-PW-ZA-2220, SDR-2-CON-PW-ZA-1210, SDR-2-CON-PW-ZA-1280, SDR-2-CON-PW-ZA-2230 SS, SDR-2-CON-PW-ZA-2680, SDR-2-CON-PW-ZA-2660, SDR-2-CON-PW-ZA-2690, SDR-2-CON-PW-ZA-2670, SDR-2-CON-PW-ZA-2700 SS, SDR-2-CON-PW-ZA-2710, SDR-2-CON-PW-ZA-2740, SDR-2-CON-PW-ZA-2720, SDR-2-CON-PW-ZA-2730, SDR-2-CON-PW-ZA-2750 FS+3d, SDR-2-CON-PW-ZA-2780, SDR-2-CON-PW-ZA-2760, SDR-2-CON-PW-ZA-2790, SDR-2-CON-PW-ZA-2770, SDR-2-CON-PW-ZA-2800 FS+3d, SDR-2-CON-PW-ZA-1400, SDR-2-CON-PW-ZA-2240, SDR-2-CON-PW-ZA-1410, SDR-2-CON-PW-ZA-1480, SDR-2-CON-PW-ZA-2250, SDR-2-CON-PW-ZA-3230, SDR-2-CON-PW-ZA-3210, SDR-2-CON-PW-ZA-3240, SDR-2-CON-PW-ZA-3220, SDR-2-CON-PW-ZA-3250, SDR-2-CON-PW-ZA-3260, SDR-2-CON-PW-ZA-3290, SDR-2-CON-PW-ZA-3270, SDR-2-CON-PW-ZA-3280, SDR-2-CON-PW-ZA-3300 FS+2.8d, SDR-2-CON-PW-ZA-3330, SDR-2-CON-PW-ZA-3310, SDR-2-CON-PW-ZA-3340, SDR-2-CON-PW-ZA-3320, SDR-2-CON-PW-ZA-3350, SDR-2-CON-PW-ZA-3360, SDR-2-CON-PW-ZA-3390, SDR-2-CON-PW-ZA-3370, SDR-2-CON-PW-ZA-3380, SDR-2-CON-PW-ZA-3400, SDR-2-CON-PW-ZA-3430, SDR-2-CON-PW-ZA-3410, SDR-2-CON-PW-ZA-3440, SDR-2-CON-PW-ZA-3420, SDR-2-CON-PW-ZA-3450, SDR-2-CON-PW-ZA-3460, SDR-2-CON-PW-ZA-3490, SDR-2-CON-PW-ZA-3470, SDR-2-CON-PW-ZA-3480, SDR-2-CON-PW-ZA-3500 SS, SDR-2-CON-PW-ZA-3530, SDR-2-CON-PW-ZA-3510, SDR-2-CON-PW-ZA-3540, SDR-2-CON-PW-ZA-3520, SDR-2-CON-PW-ZA-3550 SS, SDR-2-CON-PW-ZA-3560, SDR-2-CON-PW-ZA-3590, SDR-2-CON-PW-ZA-3570, SDR-2-CON-PW-ZA-3580, SDR-2-CON-PW-ZA-3600 SS, SDR-2-CON-PW-ZA-3630, SDR-2-CON-PW-ZA-3610, SDR-2-CON-PW-ZA-3640, SDR-2-CON-PW-ZA-3620, SDR-2-CON-PW-ZA-3650 SS, SDR-2-CON-PW-ZA-2810, SDR-2-CON-PW-ZA-2840, SDR-2-CON-PW-ZA-2820, SDR-2-CON-PW-ZA-2830, SDR-2-CON-PW-ZA-2850 SS, SDR-2-CON-PW-ZA-2880, SDR-2-CON-PW-ZA-2860, SDR-2-CON-PW-ZA-2890, SDR-2-CON-PW-ZA-2870, SDR-2-CON-PW-ZA-2900 SS, SDR-2-CON-PW-ZA-2360, SDR-2-CON-PW-ZA-2440, SDR-2-CON-PW-ZA-2370, SDR-2-CON-PW-ZA-2430, SDR-2-CON-PW-ZA-2450 SS, SDR-2-CON-PW-ZA-2400, SDR-2-CON-PW-ZA-2380, SDR-2-CON-PW-ZA-2410, SDR-2-CON-PW-ZA-2390, SDR-2-CON-PW-ZA-2420 SS, SDR-2-CON-PW-ZA-2460, SDR-2-CON-PW-ZA-2540, SDR-2-CON-PW-ZA-2470, SDR-2-CON-PW-ZA-2530, SDR-2-CON-PW-ZA-2550 SS, SDR-2-CON-PW-ZA-2500, SDR-2-CON-PW-ZA-2480, SDR-2-CON-PW-ZA-2510, SDR-2-CON-PW-ZA-2490, SDR-2-CON-PW-ZA-2520 SS, SDR-2-CON-PW-ZG-1000, SDR-2-CON-PW-ZG-1500, SDR-2-CON-PW-ZG-1010, SDR-2-CON-PW-ZG-1080, SDR-2-CON-PW-ZG-1510 SS, SDR-2-CON-PW-ZA-3680, SDR-2-CON-PW-ZA-3660, SDR-2-CON-PW-ZA-3690, SDR-2-CON-PW-ZA-3670, SDR-2-CON-PW-ZA-3700 SS, SDR-2-CON-PW-ZA-2910, SDR-2-CON-PW-ZA-2940, SDR-2-CON-PW-ZA-2920, SDR-2-CON-PW-ZA-2930, SDR-2-CON-PW-ZA-2950 SS, SDR-2-CON-PW-ZA-2980, SDR-2-CON-PW-ZA-2960, SDR-2-CON-PW-ZA-2990, SDR-2-CON-PW-ZA-2970 SS, SDR-2-CON-PW-ZA-3010, SDR-2-CON-PW-ZA-3040, SDR-2-CON-PW-ZA-3020, SDR-2-CON-PW-ZA-3030, SDR-2-CON-PW-ZA-3050 SS, SDR-2-CON-PW-ZA-3080, SDR-2-CON-PW-ZA-3060, SDR-2-CON-PW-ZA-3090, SDR-2-CON-PW-ZA-3070, SDR-2-CON-PW-ZA-3100 SS, SDR-2-CON-PW-ZA-3110, SDR-2-CON-PW-ZA-3140, SDR-2-CON-PW-ZA-3120, SDR-2-CON-PW-ZA-3130, SDR-2-CON-PW-ZA-3150 SS, SDR-2-CON-PW-ZA-3180, SDR-2-CON-PW-ZA-3160, SDR-2-CON-PW-ZA-3190, SDR-2-CON-PW-ZA-3170, SDR-2-CON-PW-ZA-3200 SS, SDR-2-CON-PW-ZA-2560, SDR-2-CON-PW-ZA-2640, SDR-2-CON-PW-ZA-2570, SDR-2-CON-PW-ZA-2630, SDR-2-CON-PW-ZA-2650 SS, SDR-2-CON-PW-ZA-2600, SDR-2-CON-PW-ZA-2580, SDR-2-CON-PW-ZA-2610, SDR-2-CON-PW-ZA-2590, SDR-2-CON-PW-ZA-2620 SS, SDR-2-CON-SL-ZA-1000, SDR-2-CON-SL-ZA-1010, SDR-2-CON-SL-ZA-1110, SDR-2-CON-SL-ZA-1100, SDR-2-CON-SL-ZA-2870, SDR-2-CON-SL-ZA-2880, SDR-2-CON-SL-ZA-2900, SDR-2-CON-SL-ZA-2890, SDR-2-CON-SL-ZA-1300, SDR-2-CON-SL-ZA-1310, SDR-2-CON-SL-ZA-1410, SDR-2-CON-SL-ZA-1400, SDR-2-CON-SL-ZA-2950, SDR-2-CON-SL-ZA-2960, SDR-2-CON-SL-ZA-2980, SDR-2-CON-SL-ZA-2970, SDR-2-CON-SL-ZA-2990, SDR-2-CON-SL-ZA-3000, SDR-2-CON-SL-ZA-3020, SDR-2-CON-SL-ZA-3010, SDR-2-CON-SL-ZA-3030, SDR-2-CON-SL-ZA-3040, SDR-2-CON-SL-ZA-3060, SDR-2-CON-SL-ZA-3050, SDR-2-CON-SL-ZA-3070, SDR-2-CON-SL-ZA-3080, SDR-2-CON-SL-ZA-3100, SDR-2-CON-SL-ZA-3090, SDR-2-CON-SL-ZA-3110, SDR-2-CON-SL-ZA-3120, SDR-2-CON-SL-ZA-3140, SDR-2-CON-SL-ZA-3130, SDR-2-CON-SL-ZA-3150, SDR-2-CON-SL-ZA-3160, SDR-2-CON-SL-ZA-3180, SDR-2-CON-SL-ZA-3170, SDR-2-CON-SL-ZA-3190, SDR-2-CON-SL-ZA-3200, SDR-2-CON-SL-ZA-3220, SDR-2-CON-SL-ZA-3210, SDR-2-CON-SL-ZA-2910, SDR-2-CON-SL-ZA-2920, SDR-2-CON-SL-ZA-2940, SDR-2-CON-SL-ZA-2930, SDR-2-CON-SL-ZA-2650, SDR-2-CON-SL-ZA-2760, SDR-2-CON-SL-ZA-2770, SDR-2-CON-SL-ZA-2780, SDR-2-CON-SL-ZA-2660, SDR-2-CON-SL-ZA-2790, SDR-2-CON-SL-ZA-2800, SDR-2-CON-SL-ZA-2670, SDR-2-CON-SL-ZA-2810, SDR-2-CON-SL-ZA-2820, SDR-2-CON-SL-ZA-2680, SDR-2-CON-SL-ZA-2830, SDR-2-CON-SL-ZA-2840, SDR-2-CON-SL-ZA-2690, SDR-2-CON-SL-ZA-2850, SDR-2-CON-SL-ZA-2860, SDR-2-CON-MV-ZA-1000, SDR-2-CON-MV-ZA-1070, SDR-2-CON-MV-ZA-1150, SDR-2-CON-MV-ZA-1100, SDR-2-CON-MV-ZA-1160, SDR-2-CON-MV-ZA-1170, SDR-2-CON-MV-ZA-1190, SDR-2-CON-MV-ZA-1180, SDR-2-CON-MV-ZA-1200, SDR-2-CON-MV-ZA-1210, SDR-2-CON-MV-ZA-1230, SDR-2-CON-MV-ZA-1220, SDR-2-CON-MV-ZA-1240, SDR-2-CON-MV-ZA-1250, SDR-2-CON-MV-ZA-1270, SDR-2-CON-MV-ZA-1260, SDR-2-CON-TE-ZA-1000, SDR-2-CON-TE-ZA-1010, SDR-2-CON-TE-ZA-1020, SDR-2-CON-TE-ZA-1840, SDR-2-CON-TE-ZA-1030, SDR-2-CON-TE-ZA-1850, SDR-2-CON-TE-ZA-1040, SDR-2-CON-TE-ZA-1050, SDR-2-CON-TE-ZA-1060, SDR-2-CON-TE-ZA-3210, SDR-2-CON-TE-ZA-3220, SDR-2-CON-TE-ZA-3230, SDR-2-CON-TE-ZA-3280, SDR-2-CON-TE-ZA-3240, SDR-2-CON-TE-ZA-3290, SDR-2-CON-TE-ZA-3250, SDR-2-CON-TE-ZA-3260, SDR-2-CON-TE-ZA-3270, SDR-2-CON-TE-ZA-3300, SDR-2-CON-TE-ZA-3310, SDR-2-CON-TE-ZA-3320, SDR-2-CON-TE-ZA-3370, SDR-2-CON-TE-ZA-3330, SDR-2-CON-TE-ZA-3380, SDR-2-CON-TE-ZA-3340, SDR-2-CON-TE-ZA-3350, SDR-2-CON-TE-ZA-3360, SDR-2-CON-TE-ZA-3390, SDR-2-CON-TE-ZA-3400, SDR-2-CON-TE-ZA-3410, SDR-2-CON-TE-ZA-3460, SDR-2-CON-TE-ZA-3420, SDR-2-CON-TE-ZA-3470, SDR-2-CON-TE-ZA-3430, SDR-2-CON-TE-ZA-3440, SDR-2-CON-TE-ZA-3450, SDR-2-CON-TE-ZA-3480, SDR-2-CON-TE-ZA-3490, SDR-2-CON-TE-ZA-3500, SDR-2-CON-TE-ZA-3550, SDR-2-CON-TE-ZA-3510, SDR-2-CON-TE-ZA-3560, SDR-2-CON-TE-ZA-3520, SDR-2-CON-TE-ZA-3530, SDR-2-CON-TE-ZA-3540, SDR-2-CON-TE-ZA-3570, SDR-2-CON-TE-ZA-3580, SDR-2-CON-TE-ZA-3590, SDR-2-CON-TE-ZA-3640, SDR-2-CON-TE-ZA-3600, SDR-2-CON-TE-ZA-3650, SDR-2-CON-TE-ZA-3610, SDR-2-CON-TE-ZA-3620, SDR-2-CON-TE-ZA-3630, SDR-2-CON-TE-ZA-3660, SDR-2-CON-TE-ZA-3670, SDR-2-CON-TE-ZA-3680, SDR-2-CON-TE-ZA-3730, SDR-2-CON-TE-ZA-3690, SDR-2-CON-TE-ZA-3740, SDR-2-CON-TE-ZA-3700, SDR-2-CON-TE-ZA-3710, SDR-2-CON-TE-ZA-3720, SDR-2-CON-TE-ZA-3750, SDR-2-CON-TE-ZA-3760, SDR-2-CON-TE-ZA-3770, SDR-2-CON-TE-ZA-3820, SDR-2-CON-TE-ZA-3780, SDR-2-CON-TE-ZA-3830, SDR-2-CON-TE-ZA-3790, SDR-2-CON-TE-ZA-3800, SDR-2-CON-TE-ZA-3810, SDR-2-CON-TE-ZA-3840, SDR-2-CON-TE-ZA-3850, SDR-2-CON-TE-ZA-3860, SDR-2-CON-TE-ZA-3910, SDR-2-CON-TE-ZA-3870, SDR-2-CON-TE-ZA-3920, SDR-2-CON-TE-ZA-3880, SDR-2-CON-TE-ZA-3890, SDR-2-CON-TE-ZA-3900, SDR-2-CON-TE-ZA-3930, SDR-2-CON-TE-ZA-3940, SDR-2-CON-TE-ZA-3950, SDR-2-CON-TE-ZA-4000, SDR-2-CON-TE-ZA-3960, SDR-2-CON-TE-ZA-4010, SDR-2-CON-TE-ZA-3970, SDR-2-CON-TE-ZA-3980, SDR-2-CON-TE-ZA-3990, SDR-2-CON-TE-ZA-4020, SDR-2-CON-TE-ZA-4030, SDR-2-CON-TE-ZA-4040, SDR-2-CON-TE-ZA-4090, SDR-2-CON-TE-ZA-4050, SDR-2-CON-TE-ZA-4100, SDR-2-CON-TE-ZA-4060, SDR-2-CON-TE-ZA-4070, SDR-2-CON-TE-ZA-4080, SDR-2-CON-TE-ZA-4110, SDR-2-CON-TE-ZA-4120, SDR-2-CON-TE-ZA-4130, SDR-2-CON-TE-ZA-4180, SDR-2-CON-TE-ZA-4140, SDR-2-CON-TE-ZA-4190, SDR-2-CON-TE-ZA-4150, SDR-2-CON-TE-ZA-4160, SDR-2-CON-TE-ZA-4170, SDR-2-CON-SL-ZA-3230, SDR-2-CON-SL-ZA-3240, SDR-2-CON-SL-ZA-3260, SDR-2-CON-SL-ZA-3250, SDR-2-CON-SL-ZA-3270, SDR-2-CON-SL-ZA-3280, SDR-2-CON-SL-ZA-3300, SDR-2-CON-SL-ZA-3290, SDR-2-CON-SL-ZA-3310, SDR-2-CON-SL-ZA-3320, SDR-2-CON-SL-ZA-3340, SDR-2-CON-SL-ZA-3330, SDR-2-CON-SL-ZA-3350, SDR-2-CON-SL-ZA-3360, SDR-2-CON-SL-ZA-3380, SDR-2-CON-SL-ZA-3370, SDR-2-CON-SL-ZA-3390, SDR-2-CON-SL-ZA-3400, SDR-2-CON-SL-ZA-3420, SDR-2-CON-SL-ZA-3410, SDR-2-CON-SL-ZA-3430, SDR-2-CON-SL-ZA-3440, SDR-2-CON-SL-ZA-3450, SDR-2-CON-SL-ZA-3460, SDR-2-CON-SL-ZA-3470, SDR-2-CON-SL-ZA-3480, SDR-2-CON-SL-ZA-3490, SDR-2-CON-SL-ZA-3500, SDR-2-CON-SL-ZA-3510, SDR-2-CON-SL-ZA-3520, SDR-2-CON-SL-ZA-3530, SDR-2-CON-SL-ZA-3540, SDR-2-CON-SL-ZA-3550, SDR-2-CON-SL-ZA-3560, SDR-2-CON-SL-ZA-3570, SDR-2-CON-SL-ZA-3580, SDR-2-CON-MV-ZA-1280, SDR-2-CON-MV-ZA-1290, SDR-2-CON-MV-ZA-1310, SDR-2-CON-MV-ZA-1300, SDR-2-CON-MV-ZA-1320, SDR-2-CON-MV-ZA-1330, SDR-2-CON-MV-ZA-1350, SDR-2-CON-MV-ZA-1340, SDR-2-CON-TE-ZA-4200, SDR-2-CON-TE-ZA-4210, SDR-2-CON-TE-ZA-4220, SDR-2-CON-TE-ZA-4270, SDR-2-CON-TE-ZA-4230, SDR-2-CON-TE-ZA-4280, SDR-2-CON-TE-ZA-4240, SDR-2-CON-TE-ZA-4250, SDR-2-CON-TE-ZA-4260, SDR-2-CON-TE-ZA-4290, SDR-2-CON-TE-ZA-4300, SDR-2-CON-TE-ZA-4310, SDR-2-CON-TE-ZA-4360, SDR-2-CON-TE-ZA-4320, SDR-2-CON-TE-ZA-4370, SDR-2-CON-TE-ZA-4330, SDR-2-CON-TE-ZA-4340, SDR-2-CON-TE-ZA-4350, SDR-2-CON-TE-ZA-4380, SDR-2-CON-TE-ZA-4390, SDR-2-CON-TE-ZA-4400, SDR-2-CON-TE-ZA-4450, SDR-2-CON-TE-ZA-4410, SDR-2-CON-TE-ZA-4460, SDR-2-CON-TE-ZA-4420, SDR-2-CON-TE-ZA-4430, SDR-2-CON-TE-ZA-4440, SDR-2-CON-TE-ZA-4470, SDR-2-CON-TE-ZA-4480, SDR-2-CON-TE-ZA-4490, SDR-2-CON-TE-ZA-4540, SDR-2-CON-TE-ZA-4500, SDR-2-CON-TE-ZA-4550, SDR-2-CON-TE-ZA-4510, SDR-2-CON-TE-ZA-4520, SDR-2-CON-TE-ZA-4530, SDR-2-CON-CC-ZA-1000, SDR-2-CON-CC-ZA-1030, SDR-2-CON-CC-ZA-1050, SDR-2-CON-CC-ZA-1060, SDR-2-CON-CC-ZA-1080, SDR-2-CON-CC-ZA-1090, SDR-2-CON-CC-ZA-1100, SDR-2-CON-CC-ZA-1110, SDR-2-CON-CC-ZA-1240, SDR-2-CON-CC-ZA-1250, SDR-2-CON-CC-ZA-1260, SDR-2-CON-CC-ZA-1270, SDR-2-CON-CC-ZA-1380, SDR-2-CON-CC-ZA-1390, SDR-2-CON-CC-ZA-1400, SDR-2-CON-CC-ZA-1410, SDR-2-CON-CC-ZA-1500, SDR-2-CON-CC-ZA-1510, SDR-2-CON-CC-ZA-1520, SDR-2-CON-CC-ZA-1530, SDR-2-CON-CC-ZA-1540, SDR-2-CON-CC-ZA-1550, SDR-2-CON-CC-ZA-1560, SDR-2-CON-CC-ZA-1570, SDR-2-CON-CC-ZA-1580, SDR-2-CON-CC-ZA-1590, SDR-2-CON-CC-ZA-1600, SDR-2-CON-CC-ZA-1610, SDR-2-CON-CC-ZA-1620, SDR-2-CON-CC-ZA-1630, SDR-2-CON-CC-ZA-1640, SDR-2-CON-CC-ZA-1650, SDR-2-CON-CC-ZA-1660, SDR-2-CON-CC-ZA-1670, SDR-2-CON-CC-ZA-1700, SDR-2-CON-CC-ZA-1720, SDR-2-CON-CC-ZA-1730, SDR-2-CON-CC-ZA-1750, SDR-2-CON-CC-ZA-1760, SDR-2-CON-CC-ZA-1770, SDR-2-CON-CC-ZA-1780, SDR-2-CON-CC-ZA-1790, SDR-2-CON-CC-ZA-1800, SDR-2-CON-CC-ZA-1810, SDR-2-CON-CC-ZA-1820, SDR-2-CON-CC-ZA-1830, SDR-2-CON-CC-ZA-1840, SDR-2-CON-CC-ZA-1850, SDR-2-CON-CC-ZA-1860, SDR-2-CON-CC-ZG-1500, SDR-2-CON-CC-ZG-1540, SDR-2-CON-CC-ZG-1550, SDR-2-CON-CC-ZG-1510, SDR-2-CON-CC-ZG-1560, SDR-2-CON-CC-ZG-1570, SDR-2-CON-CC-ZG-1580, SDR-2-CON-CC-ZG-1520, SDR-2-CON-CC-ZG-1590, SDR-2-CON-CC-ZG-1530, SDR-2-CON-CC-ZG-1600, SDR-2-CON-CC-ZG-1610, SDR-2-CON-CC-ZG-1620, SDR-2-CON-CC-ZG-1630, SDR-2-CON-CC-ZG-1640, SDR-2-CON-CC-ZG-1650, SDR-2-CON-CC-ZG-1660, SDR-2-CON-RW-ZA-1720, SDR-2-CON-RW-ZA-1720 FF, SDR-2-CON-ST-ZA-6120, SDR-2-CON-SE-ZA-2690 | 0d |
|  | 8 | **install** |  | 2027-06-05 | 2027-06-19 |  |  |
| SDR-2-CON-IR-ZA-1010 |  | Installation of HDPE Pipe | 13d | 2027-06-05 | 2027-06-19 | SDR-2-TC-PW-1050 SS, SDR-2-TC-TSE-1040 SS, SDR-2-CON-PW-ZA-3500, SDR-2-CON-PW-ZA-3600, SDR-2-CON-PW-ZA-2850, SDR-2-CON-PW-ZA-2450, SDR-2-CON-PW-ZA-2550, SDR-2-CON-PW-ZG-1510, SDR-2-CON-PW-ZA-2950, SDR-2-CON-PW-ZA-3050, SDR-2-CON-PW-ZA-3150, SDR-2-CON-IR-ZA-1000 | 0d |
|  | 9 | **Finishing** |  | 2027-06-20 | 2027-06-30 |  |  |
| SDR-2-CON-IR-ZA-1020 |  | Finishing Works for irrigation | 10d | 2027-06-20 | 2027-06-30 | SDR-2-CON-IR-ZA-1010 | 0d |
|  | 10 | **Repairs** |  | 2027-07-01 | 2027-07-05 |  |  |
| SDR-2-CON-IR-ZA-1030 |  | Repair for irrigation Works | 4d | 2027-07-01 | 2027-07-05 | SDR-2-CON-IR-ZA-1020 | 0d |
|  | 2 | **IRRIGATION WORKS IN ( PH2-COL-MC20 )** |  | 2027-05-08 | 2027-07-05 |  |  |
|  | 7 | **Pre install** |  | 2027-05-08 | 2027-06-05 |  |  |
| SDR-2-CON-IR-ZA-2120 |  | Pre Install for irrigation Works | 20d | 2027-05-08 | 2027-06-05 | SDR-2-CON-ST-ZA-4020, SDR-2-CON-IR-ZA-1000 SS | 0d |
|  | 8 | **install** |  | 2027-06-06 | 2027-06-19 |  |  |
| SDR-2-CON-IR-ZA-2130 |  | Installation of HDPE Pipe | 12d | 2027-06-06 | 2027-06-19 | SDR-2-CON-IR-ZA-2120 | 0d |
|  | 9 | **Finishing** |  | 2027-06-20 | 2027-06-29 |  |  |
| SDR-2-CON-IR-ZA-2140 |  | Finishing Works for irrigation | 9d | 2027-06-20 | 2027-06-29 | SDR-2-CON-IR-ZA-2130 | 0d |
|  | 10 | **Repairs** |  | 2027-06-30 | 2027-07-05 |  |  |
| SDR-2-CON-IR-ZA-2150 |  | Repair for irrigation Works | 5d | 2027-06-30 | 2027-07-05 | SDR-2-CON-IR-ZA-2140 | 0d |
|  | 11 | **IRRIGATION WORKS IN ( PH2-A-MCA0 )** |  | 2027-05-08 | 2027-07-01 |  |  |
|  | 7 | **Pre install** |  | 2027-05-08 | 2027-06-03 |  |  |
| SDR-2-CON-IR-ZA-2160 |  | Pre Install for irrigation Works | 19d | 2027-05-08 | 2027-06-03 | SDR-2-CON-ST-ZA-4920, SDR-2-CON-IR-ZA-1000 SS | 0d |
|  | 8 | **install** |  | 2027-06-05 | 2027-06-19 |  |  |
| SDR-2-CON-IR-ZA-2170 |  | Installation of HDPE Pipe | 13d | 2027-06-05 | 2027-06-19 | SDR-2-CON-IR-ZA-2160 | 0d |
|  | 9 | **Finishing** |  | 2027-06-20 | 2027-06-29 |  |  |
| SDR-2-CON-IR-ZA-2180 |  | Finishing Works for irrigation | 9d | 2027-06-20 | 2027-06-29 | SDR-2-CON-IR-ZA-2170 | 0d |
|  | 10 | **Repairs** |  | 2027-06-30 | 2027-07-01 |  |  |
| SDR-2-CON-IR-ZA-2190 |  | Repair for irrigation Works | 2d | 2027-06-30 | 2027-07-01 | SDR-2-CON-IR-ZA-2180 | 0d |
|  | 12 | **IRRIGATION WORKS IN ( PH2-A-MCB0 )** |  | 2027-05-08 | 2027-07-05 |  |  |
|  | 7 | **Pre install** |  | 2027-05-08 | 2027-06-05 |  |  |
| SDR-2-CON-IR-ZA-2200 |  | Pre Install for irrigation Works | 20d | 2027-05-08 | 2027-06-05 | SDR-2-CON-ST-ZA-4020, SDR-2-CON-IR-ZA-1000 SS | 0d |
|  | 8 | **install** |  | 2027-06-06 | 2027-06-19 |  |  |
| SDR-2-CON-IR-ZA-2210 |  | Installation of HDPE Pipe | 12d | 2027-06-06 | 2027-06-19 | SDR-2-CON-IR-ZA-2200, SDR-2-CON-ST-ZA-5970 | 0d |

| ID | WBS | Task | Duration | Start | Finish | Predecessors | Total float |
| --- | --- | --- | --- | --- | --- | --- | --- |
|  | 9 | **Finishing** |  | 2027-06-20 | 2027-06-28 |  |  |
| SDR-2-CON-IR-ZA-2220 |  | Finishing Works for irrigation | 8d | 2027-06-20 | 2027-06-28 | SDR-2-CON-IR-ZA-2210 | 0d |
|  | 10 | **Repairs** |  | 2027-06-29 | 2027-07-05 |  |  |
| SDR-2-CON-IR-ZA-2230 |  | Repair for irrigation Works | 6d | 2027-06-29 | 2027-07-05 | SDR-2-CON-IR-ZA-2220 | 0d |
|  | 3 | **IRRIGATION WORKS IN ( PH2-A-MCC0 )** |  | 2027-05-08 | 2027-07-04 |  |  |
|  | 7 | **Pre install** |  | 2027-05-08 | 2027-06-05 |  |  |
| SDR-2-CON-IR-ZA-2240 |  | Pre Install for irrigation Works | 20d | 2027-05-08 | 2027-06-05 | SDR-2-CON-ST-ZA-4470, SDR-2-CON-IR-ZA-1000 SS | 0d |
|  | 8 | **install** |  | 2027-06-06 | 2027-06-20 |  |  |
| SDR-2-CON-IR-ZA-2250 |  | Installation of HDPE Pipe | 13d | 2027-06-06 | 2027-06-20 | SDR-2-CON-IR-ZA-2240 | 0d |
|  | 9 | **Finishing** |  | 2027-06-21 | 2027-07-01 |  |  |
| SDR-2-CON-IR-ZA-2260 |  | Finishing Works for irrigation | 10d | 2027-06-21 | 2027-07-01 | SDR-2-CON-IR-ZA-2250 | 0d |
|  | 10 | **Repairs** |  | 2027-07-03 | 2027-07-04 |  |  |
| SDR-2-CON-IR-ZA-2270 |  | Repair for irrigation Works | 2d | 2027-07-03 | 2027-07-04 | SDR-2-CON-IR-ZA-2260 | 0d |
|  | 4 | **IRRIGATION WORKS IN ( PH2-A-MCD0 )** |  | 2027-05-08 | 2027-07-05 |  |  |
|  | 7 | **Pre install** |  | 2027-05-08 | 2027-06-05 |  |  |
| SDR-2-CON-IR-ZA-2280 |  | Pre Install for irrigation Works | 20d | 2027-05-08 | 2027-06-05 | SDR-2-CON-IR-ZA-1000 SS | 0d |
|  | 8 | **install** |  | 2027-06-06 | 2027-06-20 |  |  |
| SDR-2-CON-IR-ZA-2290 |  | Installation of HDPE Pipe | 13d | 2027-06-06 | 2027-06-20 | SDR-2-CON-IR-ZA-2280 | 0d |
|  | 9 | **Finishing** |  | 2027-06-21 | 2027-06-30 |  |  |
| SDR-2-CON-IR-ZA-2300 |  | Finishing Works for irrigation | 9d | 2027-06-21 | 2027-06-30 | SDR-2-CON-IR-ZA-2290 | 0d |
|  | 10 | **Repairs** |  | 2027-07-01 | 2027-07-05 |  |  |
| SDR-2-CON-IR-ZA-2310 |  | Repair for irrigation Works | 4d | 2027-07-01 | 2027-07-05 | SDR-2-CON-IR-ZA-2300 | 0d |
|  | 5 | **IRRIGATION WORKS IN ( PH2-A-MCE0 )** |  | 2027-05-08 | 2027-07-05 |  |  |
|  | 7 | **Pre install** |  | 2027-05-08 | 2027-06-05 |  |  |
| SDR-2-CON-IR-ZA-2320 |  | Pre Install for irrigation Works | 20d | 2027-05-08 | 2027-06-05 | SDR-2-CON-ST-ZA-4320, SDR-2-CON-IR-ZA-1000 SS | 0d |
|  | 8 | **install** |  | 2027-06-06 | 2027-06-20 |  |  |
| SDR-2-CON-IR-ZA-2330 |  | Installation of HDPE Pipe | 13d | 2027-06-06 | 2027-06-20 | SDR-2-CON-IR-ZA-2320 | 0d |
|  | 9 | **Finishing** |  | 2027-06-21 | 2027-07-01 |  |  |
| SDR-2-CON-IR-ZA-2340 |  | Finishing Works for irrigation | 10d | 2027-06-21 | 2027-07-01 | SDR-2-CON-IR-ZA-2330 | 0d |
|  | 10 | **Repairs** |  | 2027-07-03 | 2027-07-05 |  |  |
| SDR-2-CON-IR-ZA-2350 |  | Repair for irrigation Works | 3d | 2027-07-03 | 2027-07-05 | SDR-2-CON-IR-ZA-2340 | 0d |
|  | 6 | **IRRIGATION WORKS IN ( PH2-A-MCF0 )** |  | 2027-05-08 | 2027-07-05 |  |  |
|  | 7 | **Pre install** |  | 2027-05-08 | 2027-06-05 |  |  |
| SDR-2-CON-IR-ZA-2360 |  | Pre Install for irrigation Works | 20d | 2027-05-08 | 2027-06-05 | SDR-2-CON-ST-ZA-4470, SDR-2-CON-IR-ZA-1000 SS | 0d |
|  | 8 | **install** |  | 2027-06-06 | 2027-06-20 |  |  |
| SDR-2-CON-IR-ZA-2370 |  | Installation of HDPE Pipe | 13d | 2027-06-06 | 2027-06-20 | SDR-2-CON-IR-ZA-2360 | 0d |
|  | 9 | **Finishing** |  | 2027-06-21 | 2027-07-01 |  |  |
| SDR-2-CON-IR-ZA-2380 |  | Finishing Works for irrigation | 10d | 2027-06-21 | 2027-07-01 | SDR-2-CON-IR-ZA-2370 | 0d |
|  | 10 | **Repairs** |  | 2027-07-03 | 2027-07-05 |  |  |
| SDR-2-CON-IR-ZA-2390 |  | Repair for irrigation Works | 3d | 2027-07-03 | 2027-07-05 | SDR-2-CON-IR-ZA-2380 | 0d |
|  | 7 | **IRRIGATION WORKS IN ( PH2-A-MCG0 )** |  | 2027-05-08 | 2027-07-05 |  |  |
|  | 7 | **Pre install** |  | 2027-05-08 | 2027-06-05 |  |  |
| SDR-2-CON-IR-ZA-2400 |  | Pre Install for irrigation Works | 20d | 2027-05-08 | 2027-06-05 | SDR-2-CON-ST-ZA-4620, SDR-2-CON-IR-ZA-1000 SS | 0d |
|  | 8 | **install** |  | 2027-06-06 | 2027-06-20 |  |  |
| SDR-2-CON-IR-ZA-2410 |  | Installation of HDPE Pipe | 13d | 2027-06-06 | 2027-06-20 | SDR-2-CON-IR-ZA-2400 | 0d |
|  | 9 | **Finishing** |  | 2027-06-21 | 2027-07-03 |  |  |
| SDR-2-CON-IR-ZA-2420 |  | Finishing Works for irrigation | 11d | 2027-06-21 | 2027-07-03 | SDR-2-CON-IR-ZA-2410 | 0d |
|  | 10 | **Repairs** |  | 2027-07-04 | 2027-07-05 |  |  |
| SDR-2-CON-IR-ZA-2430 |  | Repair for irrigation Works | 2d | 2027-07-04 | 2027-07-05 | SDR-2-CON-IR-ZA-2420, SDR-2-CON-IR-ZA-2350 FF, SDR-2-CON-IR-ZA-2390 FF | 0d |
|  | 8 | **IRRIGATION WORKS IN ( PH2-A-MCH0 )** |  | 2027-05-08 | 2027-07-05 |  |  |
|  | 7 | **Pre install** |  | 2027-05-08 | 2027-06-05 |  |  |
| SDR-2-CON-IR-ZA-2440 |  | Pre Install for irrigation Works | 20d | 2027-05-08 | 2027-06-05 | SDR-2-CON-ST-ZA-4770, SDR-2-CON-IR-ZA-1000 SS | 0d |
|  | 8 | **install** |  | 2027-06-06 | 2027-06-20 |  |  |
| SDR-2-CON-IR-ZA-2450 |  | Installation of HDPE Pipe | 13d | 2027-06-06 | 2027-06-20 | SDR-2-CON-IR-ZA-2440 | 0d |
|  | 9 | **Finishing** |  | 2027-06-21 | 2027-07-03 |  |  |
| SDR-2-CON-IR-ZA-2460 |  | Finishing Works for irrigation | 11d | 2027-06-21 | 2027-07-03 | SDR-2-CON-IR-ZA-2450 | 0d |
|  | 10 | **Repairs** |  | 2027-07-04 | 2027-07-05 |  |  |
| SDR-2-CON-IR-ZA-2470 |  | Repair for irrigation Works | 2d | 2027-07-04 | 2027-07-05 | SDR-2-CON-IR-ZA-2460, SDR-2-CON-IR-ZA-2430 FF | 0d |
|  | 9 | **IRRIGATION WORKS IN ( PH2-ART-MC00 )** |  | 2027-05-08 | 2027-07-05 |  |  |
|  | 7 | **Pre install** |  | 2027-05-08 | 2027-06-05 |  |  |
| SDR-2-CON-IR-ZA-2480 |  | Pre Install for irrigation Works | 20d | 2027-05-08 | 2027-06-05 | SDR-2-CON-ST-ZA-4920, SDR-2-CON-IR-ZA-1000 SS | 0d |
|  | 8 | **install** |  | 2027-06-06 | 2027-06-20 |  |  |
| SDR-2-CON-IR-ZA-2490 |  | Installation of HDPE Pipe | 13d | 2027-06-06 | 2027-06-20 | SDR-2-CON-IR-ZA-2480 | 0d |
|  | 9 | **Finishing** |  | 2027-06-21 | 2027-07-03 |  |  |
| SDR-2-CON-IR-ZA-2500 |  | Finishing Works for irrigation | 11d | 2027-06-21 | 2027-07-03 | SDR-2-CON-IR-ZA-2490 | 0d |
|  | 10 | **Repairs** |  | 2027-07-04 | 2027-07-05 |  |  |
| SDR-2-CON-IR-ZA-2510 |  | Repair for irrigation Works | 2d | 2027-07-04 | 2027-07-05 | SDR-2-CON-IR-ZA-2500, SDR-2-CON-IR-ZA-2470 FF | 0d |
|  | 10 | **IRRIGATION WORKS IN ( PH2-ART-MC10 )** |  | 2027-05-08 | 2027-07-05 |  |  |
|  | 7 | **Pre install** |  | 2027-05-08 | 2027-06-05 |  |  |
| SDR-2-CON-IR-ZA-2520 |  | Pre Install for irrigation Works | 20d | 2027-05-08 | 2027-06-05 | SDR-2-CON-ST-ZA-4920, SDR-2-CON-IR-ZA-1000 SS | 0d |

| ID | WBS | Task | Duration | Start | Finish | Predecessors | Total float |
| --- | --- | --- | --- | --- | --- | --- | --- |
|  | 8 | **install** |  | 2027-06-06 | 2027-06-20 |  |  |
| SDR-2-CON-IR-ZA-2530 |  | Installation of HDPE Pipe | 13d | 2027-06-06 | 2027-06-20 | SDR-2-CON-IR-ZA-2520 | 0d |
|  | 9 | **Finishing** |  | 2027-06-21 | 2027-07-03 |  |  |
| SDR-2-CON-IR-ZA-2540 |  | Finishing Works for irrigation | 11d | 2027-06-21 | 2027-07-03 | SDR-2-CON-IR-ZA-2530 | 0d |
|  | 10 | **Repairs** |  | 2027-07-04 | 2027-07-05 |  |  |
| SDR-2-CON-IR-ZA-2550 |  | Repair for irrigation Works | 2d | 2027-07-04 | 2027-07-05 | SDR-2-CON-IR-ZA-2540, SDR-2-CON-IR-ZA-2510 SS | 0d |
|  | 13 | **Irrigation Controllers** |  | 2027-05-08 | 2027-07-04 |  |  |
|  | 1 | **Pre install** |  | 2027-05-08 | 2027-06-06 |  |  |
| SDR-2-CON-IR-ZA-2070 |  | Pre Install of Irrigation controllers | 21d | 2027-05-08 | 2027-06-06 | SDR-2-CON-IR-ZA-2520 SS | 0d |
|  | 2 | **install** |  | 2027-06-07 | 2027-06-23 |  |  |
| SDR-2-CON-IR-ZA-2760 |  | Install Irrigation controllers | 15d | 2027-06-07 | 2027-06-23 | SDR-2-CON-IR-ZA-2070 | 0d |
|  | 3 | **Finishing** |  | 2027-06-24 | 2027-07-03 |  |  |
| SDR-2-CON-IR-ZA-2770 |  | Finishing of Irrigation controllers | 8d | 2027-06-24 | 2027-07-03 | SDR-2-CON-IR-ZA-2760 | 0d |
|  | 4 | **Repairs** |  | 2027-07-04 | 2027-07-04 |  |  |
| SDR-2-CON-IR-ZA-2780 |  | Repairs of Irrigation controllers | 1d | 2027-07-04 | 2027-07-04 | SDR-2-CON-IR-ZA-2770, SDR-2-CON-IR-ZA-2550 SS | 0d |
|  | 14 | **Decoder Cable & Conduit Works** |  | 2027-05-08 | 2027-07-04 |  |  |
|  | 1 | **Pre install** |  | 2027-05-08 | 2027-06-06 |  |  |
| SDR-2-CON-IR-ZA-2080 |  | Pre Install of Decoder Cable & Conduits Works | 21d | 2027-05-08 | 2027-06-06 | SDR-2-CON-IR-ZA-2520 SS | 3d |
|  | 2 | **install** |  | 2027-06-07 | 2027-06-23 |  |  |
| SDR-2-CON-IR-ZA-2090 |  | Install of Decoder Cable & Conduits Works | 15d | 2027-06-07 | 2027-06-23 | SDR-2-CON-IR-ZA-2080, SDR-2-CON-IR-ZA-2080 FF | 3d |
|  | 3 | **Finishing** |  | 2027-06-24 | 2027-06-29 |  |  |
| SDR-2-CON-IR-ZA-2790 |  | Finishing of Decoder Cable & Conduits Works | 5d | 2027-06-24 | 2027-06-29 | SDR-2-CON-IR-ZA-2090 | 3d |
|  | 4 | **Repairs** |  | 2027-07-04 | 2027-07-04 |  |  |
| SDR-2-CON-IR-ZA-2800 |  | Repair of Decoder Cable & Conduits Works | 1d | 2027-07-04 | 2027-07-04 | SDR-2-CON-IR-ZA-2790, SDR-2-CON-IR-ZA-2270 FF, SDR-2-CON-IR-ZA-2780 FF | 0d |
|  | 15 | **Solar Power System Installation** |  | 2027-05-08 | 2027-07-05 |  |  |
|  | 1 | **Pre install** |  | 2027-05-08 | 2027-06-06 |  |  |
| SDR-2-CON-IR-ZA-2100 |  | Pre Install of Solar Power System Installation | 21d | 2027-05-08 | 2027-06-06 | SDR-2-CON-IR-ZA-2520 SS | 3d |
|  | 2 | **install** |  | 2027-06-07 | 2027-06-23 |  |  |
| SDR-2-CON-IR-ZA-2810 |  | Install of Pre Install of Solar Power System Installation | 15d | 2027-06-07 | 2027-06-23 | SDR-2-CON-IR-ZA-2100 | 3d |
|  | 3 | **Finishing** |  | 2027-06-24 | 2027-06-30 |  |  |
| SDR-2-CON-IR-ZA-2820 |  | Finishing of Pre Install of Solar Power System Installation | 6d | 2027-06-24 | 2027-06-30 | SDR-2-CON-IR-ZA-2810 | 3d |
|  | 4 | **Repairs** |  | 2027-07-05 | 2027-07-05 |  |  |
| SDR-2-CON-IR-ZA-2830 |  | Repair of Solar Power System Installation | 1d | 2027-07-05 | 2027-07-05 | SDR-2-CON-IR-ZA-2820, SDR-2-CON-IR-ZA-2800 | 0d |
|  | 16 | **System Integration & Programming** |  | 2027-05-08 | 2027-07-05 |  |  |
|  | 1 | **Pre install** |  | 2027-05-08 | 2027-06-06 |  |  |
| SDR-2-CON-IR-ZA-2110 |  | Pre Install of System Integration & Programming | 21d | 2027-05-08 | 2027-06-06 | SDR-2-CON-IR-ZA-2520 SS | 0d |
|  | 2 | **install** |  | 2027-06-07 | 2027-06-23 |  |  |
| SDR-2-CON-IR-ZA-2840 |  | Install of System Integration & Programming | 15d | 2027-06-07 | 2027-06-23 | SDR-2-CON-IR-ZA-2110 | 0d |
|  | 3 | **Finishing** |  | 2027-06-24 | 2027-07-03 |  |  |
| SDR-2-CON-IR-ZA-2850 |  | Finishing of System Integration & Programming | 8d | 2027-06-24 | 2027-07-03 | SDR-2-CON-IR-ZA-2840 | 0d |
|  | 4 | **Repairs** |  | 2027-07-05 | 2027-07-05 |  |  |
| SDR-2-CON-IR-ZA-2860 |  | Repair of System Integration & Programming | 1d | 2027-07-05 | 2027-07-05 | SDR-2-CON-IR-ZA-2850 FS+1d, SDR-2-CON-IR-ZA-2830 FF | 0d |
|  | 1 | **Landscape Works** |  | 2027-05-08 | 2027-07-05 |  |  |
|  | 1 | **GROUND COVER** |  | 2027-05-08 | 2027-06-15 |  |  |
| SDR-2-CON-LS-ZA-1000 |  | Clearing & grubbing of landscape areas | 15d | 2027-05-08 | 2027-05-30 | SDR-2-CLO-AS-C-1010, SDR-2-CON-IR-ZA-2520 SS, SDR-2-CON-ST-ZA-6120 | 0d |
| SDR-2-CON-LS-ZA-1010 |  | Grass laying | 14d | 2027-05-31 | 2027-06-15 | SDR-2-CON-LS-ZA-1000 | 0d |
|  | 2 | **Trees** |  | 2027-06-16 | 2027-07-05 |  |  |
| SDR-2-CON-LS-ZA-1020 |  | Albizia lebbeck tress planting. | 14d | 2027-06-16 | 2027-07-01 | SDR-2-CON-LS-ZA-1010 | 0d |
| SDR-2-CON-LS-ZA-1030 |  | Tabopia tress planting. | 14d | 2027-06-16 | 2027-07-01 | SDR-2-CON-LS-ZA-1020 SS | 0d |
| SDR-2-CON-LS-ZA-1040 |  | Plumeria alba tress planting. | 14d | 2027-06-20 | 2027-07-05 | SDR-2-CON-LS-ZA-1030 SS+3d | 0d |
| SDR-2-CON-LS-ZA-1050 |  | Cassia glauca tress planting. | 14d | 2027-06-20 | 2027-07-05 | SDR-2-CON-LS-ZA-1040 SS | 0d |
|  | 3 | **Miscellaneous landscaping items** |  | 2027-06-21 | 2027-07-05 |  |  |
| SDR-2-CON-LS-ZA-1060 |  | Gravel/Stone mulch: 75mm thick Hard, durable stone, washed free of loam, sand, clay, | 13d | 2027-06-21 | 2027-07-05 | SDR-2-CON-LS-ZA-1050 SS, SDR-2-CON-IR-ZA-2230 FF, SDR-2-CON-IR-ZA-2860 FF | 0d |
|  | ZG | **ZONE G** |  | 2027-05-08 | 2027-07-05 |  |  |
|  | 2 | **Irrigation Works** |  | 2027-05-08 | 2027-07-05 |  |  |
|  | 11 | **IRRIGATION WORKS IN ( PH2-G-MCE0 )** |  | 2027-05-08 | 2027-07-05 |  |  |
|  | 7 | **Pre install** |  | 2027-05-08 | 2027-06-05 |  |  |
| SDR-2-CON-IR-ZA-2560 |  | Pre Install for irrigation Works | 20d | 2027-05-08 | 2027-06-05 | SDR-2-CON-ST-ZA-5520 FF, SDR-2-CON-IR-ZA-1000 SS | 0d |
|  | 8 | **install** |  | 2027-06-06 | 2027-06-20 |  |  |
| SDR-2-CON-IR-ZA-2570 |  | Installation of HDPE Pipe | 13d | 2027-06-06 | 2027-06-20 | SDR-2-CON-IR-ZA-2560 | 0d |
|  | 9 | **Finishing** |  | 2027-06-21 | 2027-07-01 |  |  |
| SDR-2-CON-IR-ZA-2580 |  | Finishing Works for irrigation | 10d | 2027-06-21 | 2027-07-01 | SDR-2-CON-IR-ZA-2570 | 0d |
|  | 10 | **Repairs** |  | 2027-07-03 | 2027-07-05 |  |  |
| SDR-2-CON-IR-ZA-2590 |  | Repair for irrigation Works | 3d | 2027-07-03 | 2027-07-05 | SDR-2-CON-IR-ZA-2580 | 0d |
|  | 5 | **IRRIGATION WORKS IN ( PH2-G-MCZ0 )** |  | 2027-05-08 | 2027-07-05 |  |  |
|  | 7 | **Pre install** |  | 2027-05-08 | 2027-06-05 |  |  |
| SDR-2-CON-IR-ZA-2600 |  | Pre Install for irrigation Works | 20d | 2027-05-08 | 2027-06-05 | SDR-2-CON-ST-ZA-5670 FF, SDR-2-CON-IR-ZA-1000 SS | 0d |
|  | 8 | **install** |  | 2027-06-06 | 2027-06-20 |  |  |
| SDR-2-CON-IR-ZA-2610 |  | Installation of HDPE Pipe | 13d | 2027-06-06 | 2027-06-20 | SDR-2-CON-IR-ZA-2600 | 0d |
|  | 9 | **Finishing** |  | 2027-06-21 | 2027-07-01 |  |  |

| ID | WBS | Task | Duration | Start | Finish | Predecessors | Total float |
| --- | --- | --- | --- | --- | --- | --- | --- |
| SDR-2-CON-IR-ZA-2620 |  | Finishing Works for irrigation | 10d | 2027-06-21 | 2027-07-01 | SDR-2-CON-IR-ZA-2610 | 0d |
|  | 10 | **Repairs** |  | 2027-07-03 | 2027-07-05 |  |  |
| SDR-2-CON-IR-ZA-2630 |  | Repair for irrigation Works | 3d | 2027-07-03 | 2027-07-05 | SDR-2-CON-IR-ZA-2620, SDR-2-CON-IR-ZA-2590 FF | 0d |
|  | 1 | **IRRIGATION WORKS IN ( PH2-G-MCA0 )** |  | 2027-05-08 | 2027-07-05 |  |  |
|  | 7 | **Pre install** |  | 2027-05-08 | 2027-06-03 |  |  |
| SDR-2-CON-IR-ZA-2640 |  | Pre Install for irrigation Works | 19d | 2027-05-08 | 2027-06-03 | SDR-2-CON-IR-ZA-2600 SS, SDR-2-CON-ST-ZA-6120 FS+0.8d | 0d |
|  | 8 | **install** |  | 2027-06-05 | 2027-06-19 |  |  |
| SDR-2-CON-IR-ZA-2650 |  | Installation of HDPE Pipe | 13d | 2027-06-05 | 2027-06-19 | SDR-2-CON-IR-ZA-2640 | 0d |
|  | 9 | **Finishing** |  | 2027-06-20 | 2027-07-03 |  |  |
| SDR-2-CON-IR-ZA-2660 |  | Finishing Works for irrigation | 12d | 2027-06-20 | 2027-07-03 | SDR-2-CON-IR-ZA-2650 | 0d |
|  | 10 | **Repairs** |  | 2027-07-04 | 2027-07-05 |  |  |
| SDR-2-CON-IR-ZA-2670 |  | Repair for irrigation Works | 2d | 2027-07-04 | 2027-07-05 | SDR-2-CON-IR-ZA-2660, SDR-2-CON-IR-ZA-2630 FF | 0d |
|  | 2 | **IRRIGATION WORKS IN ( PH2-G-MCF0 )** |  | 2027-05-08 | 2027-07-05 |  |  |
|  | 7 | **Pre install** |  | 2027-05-08 | 2027-06-05 |  |  |
| SDR-2-CON-IR-ZA-2680 |  | Pre Install for irrigation Works | 20d | 2027-05-08 | 2027-06-05 | SDR-2-CON-ST-ZA-5670 FF, SDR-2-CON-IR-ZA-1000 SS | 0d |
|  | 8 | **install** |  | 2027-06-06 | 2027-06-20 |  |  |
| SDR-2-CON-IR-ZA-2690 |  | Installation of HDPE Pipe | 13d | 2027-06-06 | 2027-06-20 | SDR-2-CON-IR-ZA-2680 | 0d |
|  | 9 | **Finishing** |  | 2027-06-21 | 2027-07-03 |  |  |
| SDR-2-CON-IR-ZA-2700 |  | Finishing Works for irrigation | 11d | 2027-06-21 | 2027-07-03 | SDR-2-CON-IR-ZA-2690 | 0d |
|  | 10 | **Repairs** |  | 2027-07-04 | 2027-07-05 |  |  |
| SDR-2-CON-IR-ZA-2710 |  | Repair for irrigation Works | 2d | 2027-07-04 | 2027-07-05 | SDR-2-CON-IR-ZA-2700, SDR-2-CON-IR-ZA-2670 FF | 0d |
|  | 3 | **IRRIGATION WORKS IN ( PH2-G-MCG0 )** |  | 2027-05-08 | 2027-07-05 |  |  |
|  | 7 | **Pre install** |  | 2027-05-08 | 2027-06-03 |  |  |
| SDR-2-CON-IR-ZA-2720 |  | Pre Install for irrigation Works | 19d | 2027-05-08 | 2027-06-03 | SDR-2-CON-IR-ZA-2600 SS, SDR-2-CON-ST-ZA-6120 FS+0.8d | 0d |
|  | 8 | **install** |  | 2027-06-05 | 2027-06-19 |  |  |
| SDR-2-CON-IR-ZA-2730 |  | Installation of HDPE Pipe | 13d | 2027-06-05 | 2027-06-19 | SDR-2-CON-IR-ZA-2720, SDR-2-TC-CW-1010 | 0d |
|  | 9 | **Finishing** |  | 2027-06-20 | 2027-07-03 |  |  |
| SDR-2-CON-IR-ZA-2740 |  | Finishing Works for irrigation | 12d | 2027-06-20 | 2027-07-03 | SDR-2-CON-IR-ZA-2730 | 0d |
|  | 10 | **Repairs** |  | 2027-07-04 | 2027-07-05 |  |  |
| SDR-2-CON-IR-ZA-2750 |  | Repair for irrigation Works | 2d | 2027-07-04 | 2027-07-05 | SDR-2-CON-IR-ZA-2740, SDR-2-CON-IR-ZA-2710 FF | 0d |
|  | 13 | **Irrigation Controllers** |  | 2027-05-08 | 2027-07-05 |  |  |
|  | 1 | **Pre install** |  | 2027-05-08 | 2027-06-06 |  |  |
| SDR-2-CON-IR-ZA-2870 |  | Pre Install of Irrigation controllers | 21d | 2027-05-08 | 2027-06-06 | SDR-2-CON-IR-ZA-2520 SS | 0d |
|  | 2 | **install** |  | 2027-06-07 | 2027-06-23 |  |  |
| SDR-2-CON-IR-ZA-2880 |  | Install Irrigation controllers | 15d | 2027-06-07 | 2027-06-23 | SDR-2-CON-IR-ZA-2870 | 0d |
|  | 3 | **Finishing** |  | 2027-06-24 | 2027-07-03 |  |  |
| SDR-2-CON-IR-ZA-2890 |  | Finishing of Irrigation controllers | 8d | 2027-06-24 | 2027-07-03 | SDR-2-CON-IR-ZA-2880 | 0d |
|  | 4 | **Repairs** |  | 2027-07-04 | 2027-07-05 |  |  |
| SDR-2-CON-IR-ZA-2900 |  | Repairs of Irrigation controllers | 2d | 2027-07-04 | 2027-07-05 | SDR-2-CON-IR-ZA-2890, SDR-2-CON-IR-ZA-2750 FF | 0d |
|  | 14 | **Decoder Cable & Conduit Works** |  | 2027-05-08 | 2027-07-05 |  |  |
|  | 1 | **Pre install** |  | 2027-05-08 | 2027-06-06 |  |  |
| SDR-2-CON-IR-ZA-2910 |  | Pre Install of Decoder Cable & Conduits Works | 21d | 2027-05-08 | 2027-06-06 | SDR-2-CON-IR-ZA-2520 SS | 0d |
|  | 2 | **install** |  | 2027-06-07 | 2027-06-23 |  |  |
| SDR-2-CON-IR-ZA-2920 |  | Install of Decoder Cable & Conduits Works | 15d | 2027-06-07 | 2027-06-23 | SDR-2-CON-IR-ZA-2910, SDR-2-CON-IR-ZA-2910 FF | 0d |
|  | 3 | **Finishing** |  | 2027-06-24 | 2027-07-04 |  |  |
| SDR-2-CON-IR-ZA-2930 |  | Finishing of Decoder Cable & Conduits Works | 9d | 2027-06-24 | 2027-07-04 | SDR-2-CON-IR-ZA-2920 | 0d |
|  | 4 | **Repairs** |  | 2027-07-05 | 2027-07-05 |  |  |
| SDR-2-CON-IR-ZA-2940 |  | Repair of Decoder Cable & Conduits Works | 1d | 2027-07-05 | 2027-07-05 | SDR-2-CON-IR-ZA-2930, SDR-2-CON-IR-ZA-2900 FF | 0d |
|  | 15 | **Solar Power System Installation** |  | 2027-05-08 | 2027-07-05 |  |  |
|  | 1 | **Pre install** |  | 2027-05-08 | 2027-06-06 |  |  |
| SDR-2-CON-IR-ZA-2950 |  | Pre Install of Solar Power System Installation | 21d | 2027-05-08 | 2027-06-06 | SDR-2-CON-IR-ZA-2520 SS | 0d |
|  | 2 | **install** |  | 2027-06-07 | 2027-06-23 |  |  |
| SDR-2-CON-IR-ZA-2960 |  | Install of Pre Install of Solar Power System Installation | 15d | 2027-06-07 | 2027-06-23 | SDR-2-CON-IR-ZA-2950 | 0d |
|  | 3 | **Finishing** |  | 2027-06-24 | 2027-07-01 |  |  |
| SDR-2-CON-IR-ZA-2970 |  | Finishing of Pre Install of Solar Power System Installation | 7d | 2027-06-24 | 2027-07-01 | SDR-2-CON-IR-ZA-2960 | 0d |
|  | 4 | **Repairs** |  | 2027-07-03 | 2027-07-05 |  |  |
| SDR-2-CON-IR-ZA-2980 |  | Repair of Solar Power System Installation | 3d | 2027-07-03 | 2027-07-05 | SDR-2-CON-IR-ZA-2970 | 0d |
|  | 1 | **Landscape Works** |  | 2027-05-08 | 2027-07-05 |  |  |
|  | 1 | **GROUND COVER** |  | 2027-05-08 | 2027-06-14 |  |  |
| SDR-2-CON-LS-ZG-1000 |  | Clearing & grubbing of landscape areas | 15d | 2027-05-08 | 2027-05-30 | SDR-2-CON-LS-ZA-1000 SS, SDR-2-CON-IR-ZA-2520 SS | 0d |
| SDR-2-CON-LS-ZG-1010 |  | Grass laying | 13d | 2027-05-31 | 2027-06-14 | SDR-2-CON-LS-ZG-1000, SDR-2-CON-ST-ZA-5220, SDR-2-CON-ST-ZA-5070 | 0d |
|  | 2 | **Trees** |  | 2027-06-15 | 2027-07-05 |  |  |
| SDR-2-CON-LS-ZG-1020 |  | Albizia lebbeck tress planting. | 18d | 2027-06-15 | 2027-07-05 | SDR-2-CON-LS-ZG-1010 | 0d |
| SDR-2-CON-LS-ZG-1030 |  | Tabopia tress planting. | 18d | 2027-06-15 | 2027-07-05 | SDR-2-CON-LS-ZG-1020 SS | 0d |
| SDR-2-CON-LS-ZG-1040 |  | Plumeria alba tress planting. | 18d | 2027-06-15 | 2027-07-05 | SDR-2-CON-LS-ZG-1030 SS | 0d |
| SDR-2-CON-LS-ZG-1050 |  | Cassia glauca tress planting. | 18d | 2027-06-15 | 2027-07-05 | SDR-2-CON-LS-ZG-1040 SS | 0d |
|  | 3 | **Miscellaneous landscaping items** |  | 2027-06-15 | 2027-07-05 |  |  |
| SDR-2-CON-LS-ZG-1060 |  | Gravel/Stone mulch: 75mm thick Hard, durable stone, washed free of loam, sand, clay, | 18d | 2027-06-15 | 2027-07-05 | SDR-2-CON-LS-ZG-1050 SS | 0d |
|  | CC | **CCTV Works** |  | 2026-09-02 | 2027-01-26 |  |  |
|  | ZA | **ZONE A** |  | 2026-09-02 | 2027-01-26 |  |  |

| ID | WBS | Task | Duration | Start | Finish | Predecessors | Total float |
| --- | --- | --- | --- | --- | --- | --- | --- |
|  | 1 | **Poles 1st and 2nd Fix Works** |  | 2026-09-02 | 2026-10-10 |  |  |
|  | 1 | **Excavation** |  | 2026-09-02 | 2026-09-13 |  |  |
| SDR-2-CON-CC-ZA-1000 |  | Excavation 1Sst & 2nd Fix Works | 10d | 2026-09-02 | 2026-09-13 | SDR-2-CON-ST-ZA-6190, SDR-2-CON-ST-ZA-6280, SDR-2-PRO-DEL-M-1070, SDR-2-PRO-DEL-M-1060, SDR-2-PRO-ST-E-1140, SDR-2-PRO-ST-E-1170, SDR-2-CON-MV-ZA-1000, SDR-2-PRO-DEL-E-1130, SDR-2-PRO-DEL-E-1100 | 0d |
|  | 2 | **Install Footings** |  | 2026-09-14 | 2026-09-21 |  |  |
| SDR-2-CON-CC-ZA-1030 |  | Install Footings | 7d | 2026-09-14 | 2026-09-21 | SDR-2-CON-CC-ZA-1000 SS, SDR-2-CON-CC-ZA-1000, SDR-2-PRO-DEL-E-1120, SDR-2-PRO-DEL-E-1110, SDR-2-PRO-DEL-E-1140, SDR-2-PRO-DEL-E-1080 | 0d |
|  | 3 | **Backfilling** |  | 2026-09-22 | 2026-09-30 |  |  |
| SDR-2-CON-CC-ZA-1050 |  | Backfilling 1Sst & 2nd Fix Works | 7d | 2026-09-22 | 2026-09-30 | SDR-2-CON-CC-ZA-1030 SS, SDR-2-CON-CC-ZA-1030 | 0d |
|  | 4 | **Install pole** |  | 2026-10-01 | 2026-10-10 |  |  |
| SDR-2-CON-CC-ZA-1060 |  | Install Pole | 8d | 2026-10-01 | 2026-10-10 | SDR-2-PRO-DEL-E-1150, SDR-2-CON-CC-ZA-1050 | 0d |
|  | 2 | **25m Pole Package** |  | 2026-10-11 | 2027-01-24 |  |  |
|  | 1 | **Excavation** |  | 2026-10-11 | 2026-11-03 |  |  |
| SDR-2-CON-CC-ZA-1080 |  | 25 Meters Pole Excavation | 21d | 2026-10-11 | 2026-11-03 | SDR-2-PRO-ST-E-1090, SDR-2-PRO-ST-E-1150, SDR-2-PRO-ST-C-1080, SDR-2-PRO-MAS-C-1090, SDR-2-PRO-MAS-E-1030, SDR-2-CON-CC-ZA-1060, SDR-2-PRO-DEL-E-1150, SDR-2-PRO-ST-E-1160 | 0d |
|  | 2 | **Install Footings** |  | 2026-11-04 | 2026-11-26 |  |  |
| SDR-2-CON-CC-ZA-1090 |  | 25 Meters pole installation Footings | 20d | 2026-11-04 | 2026-11-26 | SDR-2-CON-CC-ZA-1080, SDR-2-PRO-ST-C-1090, SDR-2-PRO-MAL-E-1110, SDR-2-PRO-DEL-E-1160, SDR-2-PRO-DEL-E-1190, SDR-2-PRO-DEL-E-1180, SDR-2-PRO-DEL-E-1170 | 11d |
|  | 3 | **Backfilling** |  | 2026-12-07 | 2026-12-30 |  |  |
| SDR-2-CON-CC-ZA-1100 |  | 25 Meters pole Backfilling | 21d | 2026-12-07 | 2026-12-30 | SDR-2-CON-SL-ZA-1400, SDR-2-CON-SL-ZA-2890, SDR-2-CON-SL-ZA-1100, SDR-2-CON-TE-ZA-1050, SDR-2-CON-CC-ZA-1090 FS+8d | 11d |
|  | 4 | **Install pole** |  | 2026-12-31 | 2027-01-24 |  |  |
| SDR-2-CON-CC-ZA-1110 |  | 25 Meters pole installation | 21d | 2026-12-31 | 2027-01-24 | SDR-2-CON-CC-ZA-1100 | 11d |
|  | 3 | **7m Pole Package** |  | 2026-10-11 | 2027-01-25 |  |  |
|  | 1 | **Excavation** |  | 2026-10-11 | 2026-11-03 |  |  |
| SDR-2-CON-CC-ZA-1240 |  | 7m Meters Pole Excavation | 21d | 2026-10-11 | 2026-11-03 | SDR-2-CON-ST-ZA-6330, SDR-2-PRO-ST-E-1190, SDR-2-CON-CC-ZA-1080 SS | 0d |
|  | 2 | **Install Footings** |  | 2026-11-04 | 2026-11-28 |  |  |
| SDR-2-CON-CC-ZA-1250 |  | 7m Meters pole installation Footings | 21d | 2026-11-04 | 2026-11-28 | SDR-2-CON-CC-ZA-1240 | 10d |
|  | 3 | **Backfilling** |  | 2026-12-07 | 2026-12-30 |  |  |
| SDR-2-CON-CC-ZA-1260 |  | 7m Meters pole Backfilling | 21d | 2026-12-07 | 2026-12-30 | SDR-2-CON-RW-ZG-2500, SDR-2-CON-TE-ZA-1050, SDR-2-CON-CC-ZA-1250 FS+7d | 10d |
|  | 4 | **Install pole** |  | 2027-01-02 | 2027-01-25 |  |  |
| SDR-2-CON-CC-ZA-1270 |  | 7 Meters pole Installation | 21d | 2027-01-02 | 2027-01-25 | SDR-2-CON-RW-ZG-1960, SDR-2-CON-CC-ZA-1260 FS+1d | 10d |
|  | 4 | **35m Pole Package** |  | 2026-11-04 | 2027-01-24 |  |  |
|  | 1 | **Excavation** |  | 2026-11-04 | 2026-11-24 |  |  |
| SDR-2-CON-CC-ZA-1380 |  | 35m Meters Pole Excavation | 18d | 2026-11-04 | 2026-11-24 | SDR-2-PRO-ST-E-1180, SDR-2-PRO-ST-E-1210, SDR-2-PRO-ST-E-1220, SDR-2-PRO-ST-E-1230, SDR-2-CON-CC-ZA-1240 | 0d |
|  | 2 | **Install Footings** |  | 2026-11-25 | 2026-12-12 |  |  |
| SDR-2-CON-CC-ZA-1390 |  | 35m Meters pole installation Footings | 15d | 2026-11-25 | 2026-12-12 | SDR-2-CON-SL-ZA-3100, SDR-2-CON-CC-ZA-1380 | 11d |
|  | 3 | **Backfilling** |  | 2026-12-13 | 2026-12-31 |  |  |
| SDR-2-CON-CC-ZA-1400 |  | 35m Meters pole Backfilling | 17d | 2026-12-13 | 2026-12-31 | SDR-2-CON-MV-ZA-1300, SDR-2-CON-SL-ZA-3580, SDR-2-CON-SL-ZA-3550, SDR-2-CON-SL-ZA-3520, SDR-2-CON-SL-ZA-2860, SDR-2-CON-SL-ZA-2840, SDR-2-CON-SL-ZA-2800, SDR-2-CON-TE-ZA-3280, SDR-2-CON-CC-ZA-1390 | 11d |
|  | 4 | **Install pole** |  | 2027-01-02 | 2027-01-24 |  |  |
| SDR-2-CON-CC-ZA-1410 |  | 35 Meters pole Installation | 20d | 2027-01-02 | 2027-01-24 | SDR-2-CON-SL-ZA-2820, SDR-2-CON-CC-ZA-1400, SDR-2-PRO-DEL-E-1200 SS | 11d |
|  | 5 | **Control Room** |  | 2026-12-13 | 2027-01-06 |  |  |
| SDR-2-CON-CC-ZA-1500 |  | Existing Control Room Preparation to accomodate the new equipment | 6d | 2026-12-13 | 2026-12-19 | SDR-2-PRO-ST-E-1240, SDR-2-CON-CC-ZA-1380 FS+15d | 0d |
| SDR-2-CON-CC-ZA-1510 |  | VMS Server | 4d | 2026-12-13 | 2026-12-16 | SDR-2-CON-MV-ZA-1300, SDR-2-CON-SL-ZA-1400, SDR-2-CON-CC-ZA-1500 SS | 0d |
| SDR-2-CON-CC-ZA-1520 |  | Surveillance-optimized server for recording CCTV support simultaneous cameras stream and recording at high resolution | 4d | 2026-12-14 | 2026-12-17 | SDR-2-CON-CC-ZA-1510 SS+1d | 0d |
| SDR-2-CON-CC-ZA-1530 |  | Video analytic computing hardware | 4d | 2026-12-15 | 2026-12-19 | SDR-2-CON-SL-ZA-1400, SDR-2-CON-CC-ZA-1520 SS+1d | 0d |
| SDR-2-CON-CC-ZA-1540 |  | Workstation | 8d | 2026-12-16 | 2026-12-24 | SDR-2-CON-CC-ZA-1530 SS+1d, SDR-2-PRO-MAL-E-1150 | 0d |
| SDR-2-CON-CC-ZA-1550 |  | Professional LED screen 32 inch for workstations | 4d | 2026-12-17 | 2026-12-21 | SDR-2-CON-CC-ZA-1540 SS+1d | 0d |
| SDR-2-CON-CC-ZA-1560 |  | Professional 55" video wall cube | 4d | 2026-12-20 | 2026-12-23 | SDR-2-CON-SL-ZA-1400, SDR-2-CON-CC-ZA-1550 SS+2d, SDR-2-PRO-MAL-E-1160 | 0d |
| SDR-2-CON-CC-ZA-1570 |  | Industrial Rack-Mount Managed Modular Gigabit Ethernet PoE Switch (24-Port) for outdoor application | 8d | 2026-12-26 | 2027-01-03 | SDR-2-CON-CC-ZA-1560 FS+1d, SDR-2-PRO-MAL-E-1140 | 0d |
| SDR-2-CON-CC-ZA-1580 |  | SFP 1000Base-X SM | 7d | 2026-12-26 | 2027-01-02 | SDR-2-CON-CC-ZA-1570 SS | 0d |
| SDR-2-CON-CC-ZA-1590 |  | Professional joystick for accurate control of PTZ and PT Thermal Cameras. | 4d | 2026-12-27 | 2026-12-30 | SDR-2-CON-CC-ZA-1580 SS+1d | 0d |
| SDR-2-CON-CC-ZA-1600 |  | Fiber patch panel including all related accessories | 7d | 2026-12-28 | 2027-01-04 | SDR-2-CON-ST-ZA-6160, SDR-2-CON-CC-ZA-1590 SS+1d | 0d |
| SDR-2-CON-CC-ZA-1610 |  | UPS 5000VA to power for all servers, monitor, and switch in the cabinet | 4d | 2026-12-28 | 2026-12-31 | SDR-2-CON-CC-ZA-1600 SS, SDR-2-PRO-MAL-E-1190 | 0d |
| SDR-2-CON-CC-ZA-1620 |  | Outdoor Carrier Class Shielded Ethernet Cable for P-to-P access points 305 meter | 7d | 2026-12-30 | 2027-01-06 | SDR-2-CON-CC-ZA-1610 SS+2d | 0d |
|  | 6 | **Licenses,Documentation,Testing and Training** |  | 2026-12-31 | 2027-01-26 |  |  |
| SDR-2-CON-CC-ZA-1630 |  | VMS Lifetime Licenses | 6d | 2026-12-31 | 2027-01-06 | SDR-2-CON-CC-ZA-1590 | 0d |
| SDR-2-CON-CC-ZA-1640 |  | Camera-Interlink License | 6d | 2026-12-31 | 2027-01-06 | SDR-2-CON-SL-ZA-3050, SDR-2-CON-CC-ZA-1630 SS | 0d |
| SDR-2-CON-CC-ZA-1650 |  | Video analytics license package | 4d | 2027-01-23 | 2027-01-26 | SDR-2-CON-SL-ZA-3170, SDR-2-CON-SL-ZA-3090, SDR-2-CON-CC-ZA-1640 SS+1d | 4d |
| SDR-2-CON-CC-ZA-1660 |  | Video analytics license for ANPR | 4d | 2027-01-23 | 2027-01-26 | SDR-2-CON-CC-ZA-1650 SS | 4d |
|  | ZG | **ZONE G** |  | 2026-09-02 | 2027-01-25 |  |  |
|  | 1 | **Poles 1st and 2nd Fix Works** |  | 2026-09-02 | 2026-10-06 |  |  |
|  | 1 | **Excavation** |  | 2026-09-02 | 2026-09-09 |  |  |
| SDR-2-CON-CC-ZA-1670 |  | Excavation 1Sst & 2nd Fix Works | 7d | 2026-09-02 | 2026-09-09 | SDR-2-CON-MV-ZA-1000 | 0d |
|  | 2 | **Install Footings** |  | 2026-09-10 | 2026-09-17 |  |  |
| SDR-2-CON-CC-ZA-1700 |  | Install Footings | 7d | 2026-09-10 | 2026-09-17 | SDR-2-CON-CC-ZA-1670 | 0d |
|  | 3 | **Backfilling** |  | 2026-09-19 | 2026-09-27 |  |  |
| SDR-2-CON-CC-ZA-1720 |  | Backfilling 1Sst & 2nd Fix Works | 7d | 2026-09-19 | 2026-09-27 | SDR-2-CON-CC-ZA-1700 | 0d |
|  | 4 | **Install pole** |  | 2026-09-28 | 2026-10-06 |  |  |
| SDR-2-CON-CC-ZA-1730 |  | Install Pole | 8d | 2026-09-28 | 2026-10-06 | SDR-2-CON-CC-ZA-1720 | 0d |
|  | 2 | **25m Pole Package** |  | 2026-10-07 | 2027-01-21 |  |  |
|  | 1 | **Excavation** |  | 2026-10-07 | 2026-10-29 |  |  |
| SDR-2-CON-CC-ZA-1750 |  | 25 Meters Pole Excavation | 20d | 2026-10-07 | 2026-10-29 | SDR-2-CON-CC-ZA-1730 | 0d |
|  | 2 | **Install Footings** |  | 2026-10-31 | 2026-11-23 |  |  |
| SDR-2-CON-CC-ZA-1760 |  | 25 Meters pole installation Footings | 21d | 2026-10-31 | 2026-11-23 | SDR-2-CON-CC-ZA-1750 | 8d |

| ID | WBS | Task | Duration | Start | Finish | Predecessors | Total float |
| --- | --- | --- | --- | --- | --- | --- | --- |
|  | 3 | **Backfilling** |  | 2026-11-24 | 2026-12-16 |  |  |
| SDR-2-CON-CC-ZA-1770 |  | 25 Meters pole Backfilling | 20d | 2026-11-24 | 2026-12-16 | SDR-2-CON-CC-ZA-1760 | 8d |
|  | 4 | **Install pole** |  | 2026-12-29 | 2027-01-21 |  |  |
| SDR-2-CON-CC-ZA-1780 |  | 25 Meters pole installation | 21d | 2026-12-29 | 2027-01-21 | SDR-2-CON-CC-ZA-1770 FS+10d | 8d |
|  | 3 | **7m Pole Package** |  | 2026-10-07 | 2027-01-21 |  |  |
|  | 1 | **Excavation** |  | 2026-10-07 | 2026-10-29 |  |  |
| SDR-2-CON-CC-ZA-1790 |  | 7m Meters Pole Excavation | 20d | 2026-10-07 | 2026-10-29 | SDR-2-CON-CC-ZA-1750 SS | 0d |
|  | 2 | **Install Footings** |  | 2026-10-31 | 2026-11-22 |  |  |
| SDR-2-CON-CC-ZA-1800 |  | 7m Meters pole installation Footings | 20d | 2026-10-31 | 2026-11-22 | SDR-2-CON-CC-ZA-1790 | 0d |
|  | 3 | **Backfilling** |  | 2026-11-23 | 2026-12-15 |  |  |
| SDR-2-CON-CC-ZA-1810 |  | 7m Meters pole Backfilling | 20d | 2026-11-23 | 2026-12-15 | SDR-2-CON-CC-ZA-1800 | 0d |
|  | 4 | **Install pole** |  | 2026-12-29 | 2027-01-21 |  |  |
| SDR-2-CON-CC-ZA-1820 |  | 7 Meters pole Installation | 21d | 2026-12-29 | 2027-01-21 | SDR-2-CON-SL-ZA-3050, SDR-2-CON-SL-ZA-3010, SDR-2-CON-SL-ZA-2970, SDR-2-CON-SL-ZA-1400, SDR-2-CON-CC-ZA-1810 FS+11d | 0d |
|  | 4 | **35m Pole Package** |  | 2026-10-31 | 2027-01-21 |  |  |
|  | 1 | **Excavation** |  | 2026-10-31 | 2026-11-23 |  |  |
| SDR-2-CON-CC-ZA-1830 |  | 35m Meters Pole Excavation | 21d | 2026-10-31 | 2026-11-23 | SDR-2-CON-CC-ZA-1790 | 18d |
|  | 2 | **Install Footings** |  | 2026-11-24 | 2026-12-16 |  |  |
| SDR-2-CON-CC-ZA-1840 |  | 35m Meters pole installation Footings | 20d | 2026-11-24 | 2026-12-16 | SDR-2-CON-CC-ZA-1830 | 18d |
|  | 3 | **Backfilling** |  | 2026-11-28 | 2026-12-20 |  |  |
| SDR-2-CON-CC-ZA-1850 |  | 35m Meters pole Backfilling | 20d | 2026-11-28 | 2026-12-20 | SDR-2-CON-CC-ZA-1840 SS+3d | 18d |
|  | 4 | **Install pole** |  | 2026-12-31 | 2027-01-21 |  |  |
| SDR-2-CON-CC-ZA-1860 |  | 35 Meters pole Installation | 19d | 2026-12-31 | 2027-01-21 | SDR-2-CON-CC-ZA-1850 FS+9d | 18d |
|  | 5 | **Control Room** |  | 2026-10-31 | 2027-01-21 |  |  |
| SDR-2-CON-CC-ZG-1500 |  | Existing Control Room Preparation to accomodate the new equipments | 4d | 2026-10-31 | 2026-11-03 | SDR-2-CON-CC-ZA-1790 | 11d |
| SDR-2-CON-CC-ZG-1540 |  | Workstation | 12d | 2026-10-31 | 2026-11-12 | SDR-2-CON-CC-ZA-1790 | 10d |
| SDR-2-CON-CC-ZG-1550 |  | Professional LED screen 32 inch for workstations | 4d | 2026-10-31 | 2026-11-03 | SDR-2-CON-CC-ZG-1540 SS | 10d |
| SDR-2-CON-CC-ZG-1510 |  | VMS Server | 5d | 2026-11-04 | 2026-11-09 | SDR-2-CON-CC-ZG-1500 | 11d |
| SDR-2-CON-CC-ZG-1560 |  | Professional 55" video wall cube | 4d | 2026-11-04 | 2026-11-08 | SDR-2-CON-CC-ZG-1550 | 10d |
| SDR-2-CON-CC-ZG-1570 |  | Industrial Rack-Mount Managed Modular Gigabit Ethernet PoE Switch (24-Port) for outdoor application | 9d | 2026-11-07 | 2026-11-16 | SDR-2-CON-CC-ZG-1560 SS+2d | 10d |
| SDR-2-CON-CC-ZG-1580 |  | SFP 1000Base-X SM | 4d | 2026-11-07 | 2026-11-10 | SDR-2-CON-CC-ZG-1570 SS | 10d |
| SDR-2-CON-CC-ZG-1520 |  | Surveillance-optimized server for recording CCTV support simultaneous cameras stream and recording at high resolution | 4d | 2026-11-10 | 2026-11-14 | SDR-2-CON-CC-ZG-1510 | 11d |
| SDR-2-CON-CC-ZG-1590 |  | Professional joystick for accurate control of PTZ and PT Thermal Cameras. | 4d | 2026-11-11 | 2026-11-15 | SDR-2-CON-CC-ZG-1580 | 10d |
| SDR-2-CON-CC-ZG-1530 |  | Video analytic computing hardware | 4d | 2026-11-15 | 2026-11-18 | SDR-2-CON-CC-ZG-1520 | 19d |
| SDR-2-CON-CC-ZG-1600 |  | Fiber patch panel including all related accessories | 4d | 2026-11-16 | 2026-11-19 | SDR-2-CON-CC-ZG-1590 | 10d |
| SDR-2-CON-CC-ZG-1610 |  | UPS 5000VA to power for all servers, monitor, and switch in the cabinet | 6d | 2026-11-22 | 2026-11-28 | SDR-2-CON-CC-ZG-1600 SS+5d, SDR-2-CON-CC-ZG-1520 FS+5d | 10d |
| SDR-2-CON-CC-ZG-1620 |  | Outdoor Carrier Class Shielded Ethernet Cable for P-to-P access points 305 meter | 4d | 2027-01-18 | 2027-01-21 | SDR-2-CON-CC-ZG-1610 SS+2d, SDR-2-CON-CC-ZA-1860 FF, SDR-2-CON-CC-ZG-1530 FS+6d, SDR-2-CON-CC-ZG-1520 | 18d |
|  | 6 | **Licenses,Documentation,Testing and Training** |  | 2026-11-19 | 2027-01-25 |  |  |
| SDR-2-CON-CC-ZG-1630 |  | VMS Lifetime Licenses | 2d | 2026-11-19 | 2026-11-21 | SDR-2-CON-CC-ZG-1530 | 19d |
| SDR-2-CON-CC-ZG-1640 |  | Camera-Interlink License | 1d | 2026-11-22 | 2026-11-22 | SDR-2-CON-CC-ZG-1630 | 19d |
| SDR-2-CON-CC-ZG-1650 |  | Video analytics license package | 1d | 2026-11-22 | 2026-11-22 | SDR-2-CON-CC-ZG-1640 SS | 19d |
| SDR-2-CON-CC-ZG-1660 |  | Video analytics license for ANPR | 1d | 2027-01-25 | 2027-01-25 | SDR-2-CON-CC-ZG-1650 SS, SDR-2-CON-CC-ZA-1620 FF, SDR-2-CON-CC-ZA-1410 FF, SDR-2-CON-CC-ZA-1270 FF, SDR-2-CON-CC-ZA-1110 FF | 10d |
|  | TC | **Testing & Commissioning** |  | 2027-01-23 | 2027-07-05 |  |  |
|  | 1 | **Civil Works** |  | 2027-03-29 | 2027-04-01 |  |  |
| SDR-2-TC-CW-1010 |  | Testing & Commissioning of road works | 4d | 2027-03-29 | 2027-04-01 | SDR-2-CON-RW-ZA-1710, SDR-2-CON-RW-ZA-1130, SDR-2-CON-RW-ZA-1430 | 30d |
|  | 2 | **Storm Water Drainage Network** |  | 2027-05-05 | 2027-05-24 |  |  |
| SDR-2-TC-SWDN-1020 |  | Testing & Commissioning of network work | 12d | 2027-05-05 | 2027-05-24 | SDR-2-CON-ST-ZA-5670, SDR-2-PRO-ST-E-1170, SDR-2-PRO-ST-E-1190, SDR-2-PRO-ST-E-1200, SDR-2-PRO-ST-E-1210, SDR-2-PRO-ST-E-1220, SDR-2-CON-ST-ZA-4020 SS, SDR-2-CON-ST-ZA-4020 | 18d |
|  | 3 | **Sewerage Network** |  | 2027-04-05 | 2027-04-18 |  |  |
| SDR-2-TC-SN-1030 |  | Testing & Commissioning of Sewage Network | 12d | 2027-04-05 | 2027-04-18 | SDR-2-CON-SE-ZA-2690, SDR-2-CON-SE-ZA-1050 FS+10d, SDR-2-CON-SE-ZA-1440, SDR-2-CON-SE-ZA-1430, SDR-2-CON-SE-ZA-1530, SDR-2-CON-SE-ZA-1630, SDR-2-CLO-AS-E-1010, SDR-2-CON-SE-ZA-1540, SDR-2-CON-SE-ZA-2440, SDR-2-CON-SE-ZA-2430 | 28d |
|  | 4 | **TSE Network** |  | 2027-05-25 | 2027-06-08 |  |  |
| SDR-2-TC-TSE-1040 |  | Testing & Commissioning of TSE Network | 13d | 2027-05-25 | 2027-06-08 | SDR-2-CON-TS-ZA-2540 FF, SDR-2-CON-TS-ZA-2540 SS, SDR-2-CON-TS-ZA-1060 FS+8.5d, SDR-2-TC-SN-1030, SDR-2-CON-TS-ZA-2260, SDR-2-CON-TS-ZA-2590, SDR-2-CON-TS-ZA-3090, SDR-2-CON-TS-ZA-2990, SDR-2-CON-TS-ZA-2490, SDR-2-CON-TS-ZA-2360, SDR-2-CON-TS-ZA-3190, SDR-2-CON-TS-ZA-2190, SDR-2-CON-TS-ZA-2140, SDR-2-CON-TS-ZA-1970, SDR-2-CON-TS-ZA-2890, SDR-2-CON-TS-ZA-2790, SDR-2-CON-TS-ZA-2690, SDR-2-CON-TS-ZA-2090 SS, SDR-2-CON-TS-ZA-1070, SDR-2-CON-TS-ZA-1910, SDR-2-CON-TS-ZA-2640, SDR-2-CON-TS-ZA-2090, SDR-2-CON-TS-ZA-2290, SDR-2-CON-TS-ZA-1930, SDR-2-CON-TS-ZA-1950, SDR-2-CON-TS-ZA-2740, SDR-2-CON-TS-ZA-1070 FF, SDR-2-CON-TS-ZA-2840, SDR-2-CON-TS-ZA-1990, SDR-2-CON-TS-ZA-2390, SDR-2-CON-TS-ZA-2440, SDR-2-CON-TS-ZA-2940, SDR-2-CON-TS-ZA-3040, SDR-2-CON-TS-ZA-2540, SDR-2-CON-TS-ZA-3140 | 9d |
|  | 5 | **Portable Water** |  | 2027-05-27 | 2027-06-06 |  |  |
| SDR-2-TC-PW-1050 |  | Testing & Commissioning of Potable Network | 9d | 2027-05-27 | 2027-06-06 | SDR-2-CON-PW-ZA-2650, SDR-2-CON-PW-ZA-1070 SS+2d, SDR-2-CON-PW-ZA-2320, SDR-2-CON-PW-ZA-2620, SDR-2-CON-PW-ZA-3200, SDR-2-CON-PW-ZA-3100, SDR-2-CON-PW-ZA-3000, SDR-2-CON-PW-ZA-3700, SDR-2-CON-PW-ZA-2520, SDR-2-CON-PW-ZA-2420, SDR-2-CON-PW-ZA-2900, SDR-2-CON-PW-ZA-3650, SDR-2-CON-PW-ZA-3550, SDR-2-CON-PW-ZA-3450, SDR-2-CON-PW-ZA-3350, SDR-2-CON-PW-ZA-3250, SDR-2-CON-PW-ZA-2800, SDR-2-CON-PW-ZA-2700, SDR-2-CON-PW-ZA-1070 | 7d |
|  | 6 | **Electrical Works** |  | 2027-02-11 | 2027-02-18 |  |  |
| SDR-2-TC-EW-1060 |  | Testing & Commissioning of Electrical Network | 7d | 2027-02-11 | 2027-02-18 | SDR-2-CON-SL-ZA-2930, SDR-2-CON-SL-ZA-2970, SDR-2-CON-CC-ZA-1820, SDR-2-CON-CC-ZG-1660 | 19d |
|  | 7 | **Landscape & Irrigation Works** |  | 2027-06-29 | 2027-07-05 |  |  |
| SDR-2-TC-LIW-1070 |  | Testing & Commissioning of Landscape & Irrigation Network | 6d | 2027-06-29 | 2027-07-05 | SDR-2-TC-CCTV-1080, SDR-2-CON-IR-ZA-1010 FS+8d | 0d |
|  | 8 | **CCTV Works** |  | 2027-01-23 | 2027-02-02 |  |  |
| SDR-2-TC-CCTV-1080 |  | Testing & Commissioning of medium voltage works | 10d | 2027-01-23 | 2027-02-02 | SDR-2-CON-CC-ZA-1610 SS, SDR-2-CON-CC-ZG-1520, SDR-2-CON-CC-ZA-1860 | 21d |
|  | CO | **Close Out** |  | 2027-02-11 | 2027-07-05 |  |  |
|  | 1 | **As Built Drawings** |  | 2027-02-11 | 2027-06-06 |  |  |
|  | 1 | **Civil** |  | 2027-03-29 | 2027-04-11 |  |  |
| SDR-2-CLO-AS-C-1000 |  | Civil As-Built Drawing Submission | 7d | 2027-03-29 | 2027-04-05 | SDR-2-CON-RW-ZA-1710, SDR-2-CON-CC-ZG-1660, SDR-2-TC-CCTV-1080 SS, SDR-2-CON-CC-ZA-1660, SDR-2-CON-CC-ZA-1820, SDR-2-CON-CC-ZA-1780, SDR-2-CON-TE-ZA-4530, SDR-2-CON-TE-ZA-4540, SDR-2-CON-TE-ZA-4440, SDR-2-CON-TE-ZA-4450, SDR-2-CON-TE-ZA-4350, SDR-2-CON-TE-ZA-4360, SDR-2-CON-TE-ZA-4260, SDR-2-CON-TE-ZA-4270, SDR-2-CON-MV-ZA-1340, SDR-2-CON-MV-ZA-1300, SDR-2-CON-SL-ZA-3580, SDR-2-CON-SL-ZA-3550, SDR-2-CON-SL-ZA-3520, SDR-2-CON-SL-ZA-3490, SDR-2-CON-SL-ZA-3460, SDR-2-CON-SL-ZA-3410, SDR-2-CON-SL-ZA-3370, SDR-2-CON-SL-ZA-3330, SDR-2-CON-SL-ZA-3290, SDR-2-CON-SL-ZA-3250, SDR-2-CON-TE-ZA-4170, SDR-2-CON-TE-ZA-4180, SDR-2-CON-TE-ZA-4080, SDR-2-CON-TE-ZA-4090, SDR-2-CON-TE-ZA-3990, SDR-2-CON-TE-ZA-4000, SDR-2-CON-TE-ZA-3900, SDR-2-CON-TE-ZA-3910, SDR-2-CON-TE-ZA-3810, SDR-2-CON-TE-ZA-3820, SDR-2-CON-TE-ZA-3720, SDR-2-CON-TE-ZA-3730, SDR-2-CON-TE-ZA-3630, SDR-2-CON-TE-ZA-3640, SDR-2-CON-TE-ZA-3540, SDR-2-CON-TE-ZA-3550, SDR-2-CON-TE-ZA-3450, SDR-2-CON-TE-ZA-3460, SDR-2-CON-TE-ZA-3360, SDR-2-CON-TE-ZA-3370, SDR-2-CON-TE-ZA-3270, SDR-2-CON-TE-ZA-3280, SDR-2-CON-TE-ZA-1060, SDR-2-CON-TE-ZA-1840, SDR-2-CON-MV-ZA-1260, SDR-2-CON-MV-ZA-1220, SDR-2-CON-MV-ZA-1180, SDR-2-CON-MV-ZA-1100, SDR-2-CON-SL-ZA-2860, SDR-2-CON-SL-ZA-2840, SDR-2-CON-SL-ZA-2820, SDR-2-CON-SL-ZA-2800, SDR-2-CON-SL-ZA-2780, SDR-2-CON-SL-ZA-2930, SDR-2-CON-SL-ZA-3210, SDR-2-CON-SL-ZA-3170, SDR-2-CON-SL-ZA-3130, SDR-2-CON-SL-ZA-3090, SDR-2-CON-SL-ZA-3050, SDR-2-CON-SL-ZA-3010, SDR-2-CON-SL-ZA-2970, SDR-2-CON-SL-ZA-1400, SDR-2-CON-SL-ZA-2890, SDR-2-CON-SL-ZA-1100 | 22d |
| SDR-2-CLO-AS-C-1010 |  | Civil As-Built Drawing Approvals | 5d | 2027-04-06 | 2027-04-11 | SDR-2-CLO-AS-C-1000, SDR-2-CON-CC-ZG-1660, SDR-2-TC-EW-1060 SS | 22d |
|  | 2 | **Mechanical** |  | 2027-05-13 | 2027-06-06 |  |  |
| SDR-2-CLO-AS-M-1000 |  | Mechanical As-Built Drawing Submission | 8d | 2027-05-13 | 2027-05-27 | SDR-2-CON-PW-ZA-3350 FS+5d, SDR-2-CON-PW-ZA-2320, SDR-2-TC-SWDN-1020 SS, SDR-2-CLO-AS-E-1010 SS+7d | 11d |
| SDR-2-CLO-AS-M-1010 |  | Mechanical As-Built Drawing Approvals | 8d | 2027-05-29 | 2027-06-06 | SDR-2-CON-ST-ZA-5480 FS+13d, SDR-2-CON-ST-ZA-4730 FS+3d, SDR-2-CON-ST-ZA-4580, SDR-2-CLO-AS-M-1000 | 11d |
|  | 3 | **Electrical** |  | 2027-02-11 | 2027-02-28 |  |  |
| SDR-2-CLO-AS-E-1000 |  | Electrical As-Built Drawing Submission | 7d | 2027-02-11 | 2027-02-18 | SDR-2-CON-CC-ZG-1620, SDR-2-TC-EW-1060 SS, SDR-2-CON-ST-ZA-6080, SDR-2-CON-ST-ZA-5630 FS+10d | 19d |
| SDR-2-CLO-AS-E-1010 |  | Electrical As-Built Drawing Approvals | 7d | 2027-02-20 | 2027-02-28 | SDR-2-CLO-AS-E-1000 | 19d |
|  | 2 | **Training and Manuals** |  | 2027-06-20 | 2027-07-05 |  |  |

| ID | WBS | Task | Duration | Start | Finish | Predecessors | Total float |
| --- | --- | --- | --- | --- | --- | --- | --- |
| SDR-2-CLO-TM-1000 |  | Training and Manuals | 14d | 2027-06-20 | 2027-07-05 | SDR-2-CLO-AS-M-1010, SDR-2-CLO-AS-E-1010 SS, SDR-2-CON-IR-ZA-2130 | 0d |
|  | 3 | **Demobilize Manpower** |  | 2027-06-20 | 2027-07-05 |  |  |
| SDR-2-CLO-DM-1000 |  | Manpower Demobilize | 14d | 2027-06-20 | 2027-07-05 | SDR-2-CLO-TM-1000 SS | 0d |
|  | 4 | **Demobilize Equipment** |  | 2027-06-20 | 2027-07-05 |  |  |
| SDR-2-CLO-DE-1000 |  | Equipments Demobilize | 14d | 2027-06-20 | 2027-07-05 | SDR-2-CLO-DM-1000 SS | 0d |
|  | 5 | **Removal of Site Offices and Structures** |  | 2027-06-20 | 2027-07-05 |  |  |
| SDR-2-CLO-RO-1000 |  | Site Office Removal | 14d | 2027-06-20 | 2027-07-05 | SDR-2-CLO-DE-1000 SS | 0d |
|  | 6 | **Handover** |  | 2027-06-30 | 2027-07-05 |  |  |
| SDR-2-CLO-HO-1000 |  | Project Handover | 5d | 2027-06-30 | 2027-07-05 | SDR-2-CON-IR-ZA-2980 FF, SDR-2-TC-LIW-1070 FF, SDR-2-CLO-DE-1000 SS, SDR-2-CLO-RO-1000 SS, SDR-2-CON-RW-ZA-1150, SDR-2-CON-RW-ZA-1290, SDR-2-CON-ST-ZA-3310, SDR-2-CON-TS-ZA-1080, SDR-2-CON-TS-ZA-1260, SDR-2-CON-TS-ZA-1710, SDR-2-CON-TS-ZA-1800, SDR-2-CON-TE-ZA-1020, SDR-2-CON-TE-ZA-1060, SDR-2-CON-LS-ZA-1060 SS, SDR-2-CON-CC-ZA-1620, SDR-2-CON-CC-ZA-1660, SDR-2-CON-CC-ZG-1660, SDR-2-TC-CCTV-1080, SDR-2-CON-LS-ZG-1060 SS, SDR-2-CON-PW-ZA-1080, SDR-2-PRO-MAS-C-1100, SDR-2-PRO-MAL-M-1060, SDR-2-PRO-MAL-M-1070, SDR-2-CON-SL-ZA-2690 SS, SDR-2-PRO-MAS-E-1000, SDR-2-PRO-MAL-E-1030, SDR-2-PRO-MAL-E-1130, SDR-2-PRO-MAL-E-1120, SDR-2-CON-CC-ZA-1110 SS, SDR-2-PRO-MAL-E-1170, SDR-2-CON-CC-ZA-1270, SDR-2-CON-CC-ZA-1410 SS, SDR-2-CON-IR-ZA-1030 FF, SDR-2-PRO-MAS-E-1020, SDR-2-CON-SL-ZA-1110, SDR-2-PRO-MAS-C-1080, SDR-2-CON-MV-ZA-1150, SDR-2-PRO-MAL-M-1030, SDR-2-PRO-MAL-M-1040, SDR-2-PRO-MAL-E-1010, SDR-2-PRO-MAL-E-1020, SDR-2-PRO-MAL-E-1180, SDR-2-PRO-MAL-E-1060, SDR-2-CON-RW-ZA-1050, SDR-2-CON-RW-ZA-1200, SDR-2-CON-RW-ZA-1340, SDR-2-CON-RW-ZA-1430, SDR-2-CON-RW-ZA-1480, SDR-2-CON-RW-ZA-1570, SDR-2-CON-RW-ZA-1620, SDR-2-CON-RW-ZA-1710, SDR-2-CON-RW-ZA-1760, SDR-2-CON-RW-ZA-1850, SDR-2-CON-RW-ZA-1900, SDR-2-CON-RW-ZA-1990, SDR-2-CON-RW-ZA-2040, SDR-2-CON-RW-ZA-2130, SDR-2-CON-RW-ZA-2180, SDR-2-CON-RW-ZA-2270, SDR-2-CON-RW-ZA-2320, SDR-2-CON-RW-ZA-2410, SDR-2-CON-RW-ZA-2460, SDR-2-CON-RW-ZA-2550, SDR-2-CON-RW-ZA-2600, SDR-2-CON-RW-ZA-2690, SDR-2-CON-RW-ZA-2740, SDR-2-CON-RW-ZA-2830, SDR-2-CON-RW-ZG-1060, SDR-2-CON-RW-ZG-1210, SDR-2-CON-RW-ZG-1310, SDR-2-CON-RW-ZG-1360, SDR-2-CON-RW-ZG-1460, SDR-2-CON-RW-ZG-1510, SDR-2-CON-RW-ZG-1610, SDR-2-CON-RW-ZG-1660, SDR-2-CON-RW-ZG-1760, SDR-2-CON-RW-ZG-1810, SDR-2-CON-RW-ZG-1910, SDR-2-CON-RW-ZG-1960, SDR-2-CON-RW-ZG-2060, SDR-2-CON-RW-ZG-2110, SDR-2-CON-RW-ZG-2210, SDR-2-CON-ST-ZA-3760, SDR-2-CON-ST-ZA-4130, SDR-2-CON-ST-ZA-4280, SDR-2-CON-ST-ZA-4430, SDR-2-CON-ST-ZA-4580, SDR-2-CON-ST-ZA-4730, SDR-2-CON-ST-ZA-4880, SDR-2-CON-ST-ZA-5030, SDR-2-CON-ST-ZA-5070, SDR-2-CON-ST-ZA-5180, SDR-2-CON-ST-ZA-5220, SDR-2-CON-ST-ZA-5930, SDR-2-CON-ST-ZA-5970, SDR-2-CON-ST-ZA-5480, SDR-2-CON-ST-ZA-5630, SDR-2-CON-ST-ZA-6000, SDR-2-CON-ST-ZA-6080, SDR-2-CON-SE-ZA-1440, SDR-2-CON-SE-ZA-1540, SDR-2-CON-SE-ZA-1740, SDR-2-CON-SE-ZA-1840, SDR-2-CON-SE-ZA-1940, SDR-2-CON-SE-ZA-2040, SDR-2-CON-SE-ZA-2140, SDR-2-CON-SE-ZA-2240, SDR-2-CON-SE-ZA-2340, SDR-2-CON-SE-ZA-2440, SDR-2-CON-TS-ZA-1910, SDR-2-CON-TS-ZA-1070, SDR-2-CON-TS-ZA-2260, SDR-2-CON-TS-ZA-2040, SDR-2-CON-TS-ZA-2090, SDR-2-CON-TS-ZA-2690, SDR-2-CON-TS-ZA-2790, SDR-2-CON-TS-ZA-2890, SDR-2-CON-TS-ZA-1960, SDR-2-CON-TS-ZA-1970, SDR-2-CON-TS-ZA-2140, SDR-2-CON-TS-ZA-1980, SDR-2-CON-TS-ZA-2190, SDR-2-CON-TS-ZA-3190, SDR-2-CON-TS-ZA-2360, SDR-2-CON-TS-ZA-2490, SDR-2-CON-TS-ZA-2990, SDR-2-CON-TS-ZA-3090, SDR-2-CON-TS-ZA-2590, SDR-2-CON-PW-ZA-2320, SDR-2-CON-PW-ZA-2700, SDR-2-CON-PW-ZA-2800, SDR-2-CON-PW-ZA-3250, SDR-2-CON-PW-ZA-3350, SDR-2-CON-PW-ZA-3450, SDR-2-CON-PW-ZA-3550, SDR-2-CON-PW-ZA-3650, SDR-2-CON-PW-ZA-2900, SDR-2-CON-PW-ZA-2420, SDR-2-CON-PW-ZA-2520, SDR-2-CON-PW-ZA-3700, SDR-2-CON-PW-ZA-3000, SDR-2-CON-PW-ZA-3100, SDR-2-CON-PW-ZA-3200, SDR-2-CON-PW-ZA-2620, SDR-2-CON-SL-ZA-1100, SDR-2-CON-SL-ZA-2890, SDR-2-CON-SL-ZA-1400, SDR-2-CON-SL-ZA-2970, SDR-2-CON-SL-ZA-3010, SDR-2-CON-SL-ZA-3050, SDR-2-CON-SL-ZA-3090, SDR-2-CON-SL-ZA-3130, SDR-2-CON-SL-ZA-3170, SDR-2-CON-SL-ZA-3210, SDR-2-CON-SL-ZA-2930, SDR-2-CON-SL-ZA-2780, SDR-2-CON-SL-ZA-2800, SDR-2-CON-SL-ZA-2820, SDR-2-CON-SL-ZA-2840, SDR-2-CON-SL-ZA-2860, SDR-2-CON-MV-ZA-1100, SDR-2-CON-MV-ZA-1180, SDR-2-CON-MV-ZA-1220, SDR-2-CON-MV-ZA-1260, SDR-2-CON-TE-ZA-1840, SDR-2-CON-TE-ZA-3280, SDR-2-CON-TE-ZA-3270, SDR-2-CON-TE-ZA-3370, SDR-2-CON-TE-ZA-3360, SDR-2-CON-TE-ZA-3460, SDR-2-CON-TE-ZA-3450, SDR-2-CON-TE-ZA-3550, SDR-2-CON-TE-ZA-3540, SDR-2-CON-TE-ZA-3640, SDR-2-CON-TE-ZA-3630, SDR-2-CON-TE-ZA-3730, SDR-2-CON-TE-ZA-3720, SDR-2-CON-TE-ZA-3820, SDR-2-CON-TE-ZA-3810, SDR-2-CON-TE-ZA-3910, SDR-2-CON-TE-ZA-3900, SDR-2-CON-TE-ZA-4000, SDR-2-CON-TE-ZA-3990, SDR-2-CON-TE-ZA-4090, SDR-2-CON-TE-ZA-4080, SDR-2-CON-TE-ZA-4180, SDR-2-CON-TE-ZA-4170, SDR-2-CON-SL-ZA-3250, SDR-2-CON-SL-ZA-3290, SDR-2-CON-SL-ZA-3330, SDR-2-CON-SL-ZA-3370, SDR-2-CON-SL-ZA-3410, SDR-2-CON-SL-ZA-3460, SDR-2-CON-SL-ZA-3490, SDR-2-CON-SL-ZA-3520, SDR-2-CON-SL-ZA-3550, SDR-2-CON-SL-ZA-3580, SDR-2-CON-MV-ZA-1300, SDR-2-CON-MV-ZA-1340, SDR-2-CON-TE-ZA-4270, SDR-2-CON-TE-ZA-4260, SDR-2-CON-TE-ZA-4360, SDR-2-CON-TE-ZA-4350, SDR-2-CON-TE-ZA-4450, SDR-2-CON-TE-ZA-4440, SDR-2-CON-TE-ZA-4540, SDR-2-CON-TE-ZA-4530, SDR-2-CON-IR-ZA-2150 FF, SDR-2-CON-IR-ZA-2190 SS, SDR-2-ENG-APP-M-1010, SDR-2-PREL-1100, SDR-2-CON-SE-ZA-1610 | 0d |

## Version 2 (data date 2026-09-28, saved 2026-09-28, file Sudair 2 P2 28.09.26 INFRA.xer)

Last finish stays 2027-07-05. Complete tasks 0 → 691.

Changed:

| ID | Task | Start | Finish | Complete | Total float |
| --- | --- | --- | --- | --- | --- |
| SDR-2-MILS-1000 | Project Start Milstone | 2026-01-06 A | 2026-01-06 A | 0% → 100% | 0d → none |
| 3 | **Contractual Milestone** | 2026-02-05 → 2026-04-06 (+60d) | 2027-07-05 → 2027-07-04 (-1d) |  |  |
| SDR-2-MILS-1020 | Mobilization Finish Milestone | 2026-02-05 → 2026-04-06 A (+60d) | 2026-02-05 → 2026-04-06 A (+60d) | 0% → 100% | 2d → none |
| SDR-2-MILS-1030 | Execution Plan and Baseline Submission Finish Milestone | 2026-02-05 → 2026-04-06 A (+60d) | 2026-02-05 → 2026-04-06 A (+60d) | 0% → 100% | 2d → none |
| SDR-2-MILS-1040 | Submission and approval of plans and materials Finish Milestone | 2026-03-05 → 2026-07-25 A (+142d) | 2026-03-05 → 2026-07-25 A (+142d) | 0% → 100% | 20d → none |
| SDR-2-MILS-1060 | Completion of medium voltage works | 2027-01-21 → 2027-01-28 (+7d) | 2027-01-21 → 2027-01-28 (+7d) |  | 50d → 44d |
| SDR-2-MILS-1050 | Completion of road works | 2027-04-17 → 2027-03-28 (-20d) | 2027-04-17 → 2027-03-28 (-20d) |  | 17d → 34d |
| SDR-2-MILS-1070 | Completion of All Network work | 2027-05-04 → 2027-04-22 (-12d) | 2027-05-04 → 2027-04-22 (-12d) |  | 48d → 58d |
| SDR-2-MILS-1080 | Completion of finishing works in the project | 2027-07-05 → 2027-07-04 (-1d) | 2027-07-05 → 2027-07-04 (-1d) |  | 0d → 1d |
| 2 | **Phases Milestone** | 2026-03-05 → 2026-09-28 (+207d) |  |  |  |
| SDR-2-MILS-1090 | Engineering Phase Finish Milestone | 2026-03-05 → 2026-09-28 (+207d) | 2026-03-05 → 2026-09-28 (+207d) |  | 20d → 70d |
| SDR-2-MILS-1100 | Procurment Phase Finish Milestone | 2026-11-21 → 2026-11-04 (-17d) | 2026-11-21 → 2026-11-04 (-17d) |  | 57d → 71.1d |
| MB | **Mobilization** |  | 2026-02-05 → 2026-04-06 (+60d) |  |  |
| SDR-2-MOBL-1000 | Office Area Grading and Prepare | 2026-01-06 A | 2026-01-10 A | 0% → 100% | 2d → none |
| SDR-2-MOBL-1010 | Office Area Access Roads Prepare | 2026-01-11 A | 2026-01-14 A | 0% → 100% | 2d → none |
| SDR-2-MOBL-1020 | Offices Cabins Installation | 2026-01-15 A | 2026-01-20 A | 0% → 100% | 2d → none |
| 10 | **Offices MEP Works** | 2026-01-21 → 2026-01-15 (-6d) | 2026-01-26 → 2026-01-20 (-6d) |  |  |
| SDR-2-MOBL-1030 | Office Cabins MEP Works | 2026-01-21 → 2026-01-15 A (-6d) | 2026-01-26 → 2026-01-20 A (-6d) | 0% → 100% | 2d → none |
| SDR-2-MOBL-1040 | Manpower Arrive | 2026-01-21 A | 2026-01-25 A | 0% → 100% | 2d → none |
| SDR-2-MOBL-1050 | Equipment Arrive | 2026-01-26 A | 2026-01-31 A | 0% → 100% | 2d → none |
| SDR-2-MOBL-1060 | Project Sign Installation | 2026-02-01 A | 2026-02-05 A | 0% → 100% | 2d → none |
| 2 | **Preliminary Submittals** | 2026-02-01 → 2026-01-22 (-10d) | 2026-02-05 → 2026-04-06 (+60d) |  |  |
| 1 | **HSSE Plan** | 2026-02-01 → 2026-01-22 (-10d) | 2026-02-05 → 2026-02-28 (+23d) |  |  |
| SDR-2-PREL-1000 | Project HSSE Plan Submission | 2026-02-01 → 2026-01-22 A (-10d) | 2026-02-03 → 2026-01-26 A (-8d) | 0% → 100% | 2d → none |
| SDR-2-PREL-1010 | Project HSSE Plan Approval | 2026-02-04 → 2026-01-27 A (-8d) | 2026-02-05 → 2026-02-28 A (+23d) | 0% → 100% | 2d → none |
| 2 | **Quality Control Plan** |  | 2026-02-05 → 2026-03-05 (+28d) |  |  |
| SDR-2-PREL-1020 | Project Quality Plan Submission | 2026-02-01 A | 2026-02-03 A | 0% → 100% | 2d → none |
| SDR-2-PREL-1030 | Project Quality Plan Approval | 2026-02-04 A | 2026-02-05 → 2026-03-05 A (+28d) | 0% → 100% | 2d → none |
| 3 | **Communications Plan** | 2026-02-01 → 2026-01-29 (-3d) | 2026-02-05 → 2026-02-02 (-3d) |  |  |
| SDR-2-PREL-1040 | Project Communication Plan Submission | 2026-02-01 → 2026-01-29 A (-3d) | 2026-02-03 → 2026-02-01 A (-2d) | 0% → 100% | 2d → none |
| SDR-2-PREL-1050 | Project Communication Plan Approval | 2026-02-04 → 2026-02-01 A (-3d) | 2026-02-05 → 2026-02-02 A (-3d) | 0% → 100% | 2d → none |
| 4 | **Risk Managment Plan** | 2026-02-01 → 2026-01-28 (-4d) | 2026-02-05 → 2026-02-07 (+2d) |  |  |
| SDR-2-PREL-1070 | Project Risk Managment Plan Approvals | 2026-02-04 → 2026-01-28 A (-7d) | 2026-02-05 → 2026-02-02 A (-3d) | 0% → 100% | 2d → none |
| SDR-2-PREL-1060 | Project Risk Managment Plan Submission | 2026-02-01 A | 2026-02-03 → 2026-02-07 A (+4d) | 0% → 100% | 2d → none |
| 5 | **Project Execution Plan** |  | 2026-02-05 → 2026-02-07 (+2d) |  |  |
| SDR-2-PREL-1080 | Project Execution Plan Submission | 2026-02-01 A | 2026-02-03 → 2026-02-07 A (+4d) | 0% → 100% | 2d → none |
| SDR-2-PREL-1090 | Project Execution Plan Approvals | 2026-02-04 → 2026-02-07 A (+3d) | 2026-02-05 → 2026-02-07 A (+2d) | 0% → 100% | 2d → none |
| 6 | **Project Schedule** | 2026-02-01 → 2026-01-29 (-3d) | 2026-02-05 → 2026-04-06 (+60d) |  |  |
| SDR-2-PREL-1100 | Project Schedule Submission | 2026-02-01 → 2026-01-29 A (-3d) | 2026-02-03 A | 0% → 100% | 2d → none |
| SDR-2-PREL-1110 | Project Schedule Approvals | 2026-02-04 A | 2026-02-05 → 2026-04-06 A (+60d) | 0% → 100% | 2d → none |
| EN | **Engineering** |  | 2026-03-05 → 2026-09-28 (+207d) |  |  |
| 1 | **Shop Drawings Stage** |  | 2026-03-05 → 2026-09-28 (+207d) |  |  |
| 1 | **Submission** |  | 2026-02-21 → 2026-06-15 (+114d) |  |  |
| 4 | **Road Works** |  | 2026-02-11 → 2026-02-18 (+7d) |  |  |
| SDR-2-ENG-SUB-C-1000 | DEMOLISH WORKS OVERALL PLAN Submission | 2026-02-08 A | 2026-02-11 → 2026-02-10 A (-1d) | 0% → 100% | 1d → none |
| SDR-2-ENG-SUB-C-1010 | ROAD ZONES LAYOUT PLAN Submission | 2026-02-08 → 2026-02-11 A (+3d) | 2026-02-11 → 2026-02-12 A (+1d) | 0% → 100% | 1d → none |
| SDR-2-ENG-SUB-C-1020 | ROAD LAYOUT PLAN Submission | 2026-02-08 → 2026-02-12 A (+4d) | 2026-02-11 → 2026-02-15 A (+4d) | 0% → 100% | 1d → none |
| SDR-2-ENG-SUB-C-1030 | TYPICAL ROAD CROSS SECTIONS Submission | 2026-02-08 → 2026-02-12 A (+4d) | 2026-02-11 → 2026-02-12 A (+1d) | 0% → 100% | 1d → none |
| SDR-2-ENG-SUB-C-1040 | GRADING TYPICAL CROSS SECTIONS Submission | 2026-02-08 → 2026-02-12 A (+4d) | 2026-02-11 → 2026-02-16 A (+5d) | 0% → 100% | 1d → none |
| SDR-2-ENG-SUB-C-1050 | ZONE A ROAD SETTING OUT PLAN Submission | 2026-02-08 → 2026-02-12 A (+4d) | 2026-02-11 → 2026-02-16 A (+5d) | 0% → 100% | 1d → none |
| SDR-2-ENG-SUB-C-1060 | ZONE G ROAD SETTING OUT PLAN Submission | 2026-02-08 → 2026-02-12 A (+4d) | 2026-02-11 → 2026-02-16 A (+5d) | 0% → 100% | 1d → none |
| SDR-2-ENG-SUB-C-1070 | TYPICAL PAVEMENT DETAILS Submission | 2026-02-08 → 2026-02-16 A (+8d) | 2026-02-11 → 2026-02-17 A (+6d) | 0% → 100% | 4d → none |
| SDR-2-ENG-SUB-C-1080 | TYPICAL JUNCTION DETAIL LOCAL-1 & LOCAL-1 (40M ROW) Submission | 2026-02-08 → 2026-02-16 A (+8d) | 2026-02-11 → 2026-02-17 A (+6d) | 0% → 100% | 4d → none |
| SDR-2-ENG-SUB-C-1100 | ROAD PROFILES (ZONE G) Submission | 2026-02-08 → 2026-02-16 A (+8d) | 2026-02-11 → 2026-02-17 A (+6d) | 0% → 100% | 1d → none |
| SDR-2-ENG-SUB-C-1110 | Overall Kerbing and Pavement Layout Submission | 2026-02-08 → 2026-02-16 A (+8d) | 2026-02-11 → 2026-02-17 A (+6d) | 0% → 100% | 4d → none |
| SDR-2-ENG-SUB-C-1090 | ROAD PROFILES (ZONE A) Submission | 2026-02-08 → 2026-02-16 A (+8d) | 2026-02-11 → 2026-02-17 A (+6d) | 0% → 100% | 1d → none |
| SDR-2-ENG-SUB-C-1120 | Typical Concrete Kerb Details Submission | 2026-02-08 → 2026-02-17 A (+9d) | 2026-02-11 → 2026-02-18 A (+7d) | 0% → 100% | 4d → none |
| SDR-2-ENG-SUB-C-1130 | Typical Pavement Details Submission | 2026-02-08 → 2026-02-17 A (+9d) | 2026-02-11 → 2026-02-18 A (+7d) | 0% → 100% | 4d → none |
| SDR-2-ENG-SUB-C-1140 | Road Marking Layout Submission | 2026-02-08 → 2026-02-17 A (+9d) | 2026-02-11 → 2026-02-18 A (+7d) | 0% → 100% | 4d → none |
| SDR-2-ENG-SUB-C-1150 | Road Marking Details Submission | 2026-02-08 → 2026-02-17 A (+9d) | 2026-02-11 → 2026-02-18 A (+7d) | 0% → 100% | 4d → none |
| SDR-2-ENG-SUB-C-1160 | Road Marking And Signage Typical Standard Details Submission | 2026-02-08 → 2026-02-17 A (+9d) | 2026-02-11 → 2026-02-18 A (+7d) | 0% → 100% | 4d → none |
| SDR-2-ENG-SUB-C-1170 | Standard Details Submission | 2026-02-08 → 2026-02-17 A (+9d) | 2026-02-11 → 2026-02-18 A (+7d) | 0% → 100% | 1d → none |
| SDR-2-ENG-SUB-C-1180 | Site Safety Notice Board Submission | 2026-02-08 → 2026-02-17 A (+9d) | 2026-02-11 → 2026-02-18 A (+7d) | 0% → 100% | 1d → none |
| SDR-2-ENG-SUB-C-1190 | Location Plan For Traffic Signage Submission | 2026-02-08 → 2026-02-17 A (+9d) | 2026-02-11 → 2026-02-18 A (+7d) | 0% → 100% | 4d → none |
| 5 | **Storm Water Drainage Network** | 2026-02-08 → 2026-02-12 (+4d) | 2026-02-11 → 2026-02-25 (+14d) |  |  |
| SDR-2-ENG-SUB-M-1000 | Storm Drainage Master Plan Submission | 2026-02-08 → 2026-02-12 A (+4d) | 2026-02-11 → 2026-02-16 A (+5d) | 0% → 100% | 1d → none |
| SDR-2-ENG-SUB-M-1010 | Storm Drainage Layout Submission | 2026-02-08 → 2026-02-12 A (+4d) | 2026-02-11 → 2026-02-16 A (+5d) | 0% → 100% | 20d → none |
| SDR-2-ENG-SUB-M-1020 | Storm Network Profile Submission | 2026-02-08 → 2026-02-16 A (+8d) | 2026-02-11 → 2026-02-18 A (+7d) | 0% → 100% | 1d → none |
| SDR-2-ENG-SUB-M-1030 | Storm Network Standard Details Submission | 2026-02-08 → 2026-02-18 A (+10d) | 2026-02-11 → 2026-02-25 A (+14d) | 0% → 100% | 1d → none |
| SDR-2-ENG-SUB-M-1040 | Storm Network Section Submission | 2026-02-08 → 2026-02-18 A (+10d) | 2026-02-11 → 2026-02-25 A (+14d) | 0% → 100% | 4d → none |

| ID | Task | Start | Finish | Complete | Total float |
| --- | --- | --- | --- | --- | --- |
| SDR-2-ENG-SUB-M-1050 | POND A LAYOUT AND PROFILE Submission | 2026-02-08 → 2026-02-18 A (+10d) | 2026-02-11 → 2026-02-23 A (+12d) | 0% → 100% | 1d → none |
| SDR-2-ENG-SUB-M-1060 | TYPICAL ENERGY DISSAPATION DETAILS Submission | 2026-02-08 → 2026-02-23 A (+15d) | 2026-02-11 → 2026-02-25 A (+14d) | 0% → 100% | 4d → none |
| SDR-2-ENG-SUB-M-1070 | STORM WATER POND SIPHON PIPE DETAILS Submission | 2026-02-08 → 2026-02-23 A (+15d) | 2026-02-11 → 2026-02-25 A (+14d) | 0% → 100% | 1d → none |
| SDR-2-ENG-SUB-M-1080 | REINFORCEMENT CONCRETE WEIR AND GABION WALL DETAILS Submission | 2026-02-08 → 2026-02-23 A (+15d) | 2026-02-11 → 2026-02-25 A (+14d) | 0% → 100% | 4d → none |
| SDR-2-ENG-SUB-M-1090 | TYPICAL TRENCH AND PIPE BEDDING DETAILS Submission | 2026-02-08 → 2026-02-23 A (+15d) | 2026-02-11 → 2026-02-25 A (+14d) | 0% → 100% | 4d → none |
| SDR-2-ENG-SUB-M-1100 | FLUSH AND KERB INLET MANHOLE DETAILS Submission | 2026-02-08 → 2026-02-23 A (+15d) | 2026-02-11 → 2026-02-25 A (+14d) | 0% → 100% | 4d → none |
| SDR-2-ENG-SUB-M-1110 | BOX PIPE CONNECTION AND BOX PIPE WIDENING DETAILS Submission | 2026-02-08 → 2026-02-23 A (+15d) | 2026-02-11 → 2026-02-25 A (+14d) | 0% → 100% | 4d → none |
| SDR-2-ENG-SUB-M-1120 | TYPICAL BOX PIPE JUNCTION DETAILS Submission | 2026-02-08 → 2026-02-23 A (+15d) | 2026-02-11 → 2026-02-25 A (+14d) | 0% → 100% | 4d → none |
| SDR-2-ENG-SUB-M-1130 | TYPICAL JUNCTION CHAMBER REINFORCEMENT DETAILS Submission | 2026-02-08 → 2026-02-23 A (+15d) | 2026-02-11 → 2026-02-25 A (+14d) | 0% → 100% | 4d → none |
| SDR-2-ENG-SUB-M-1140 | DEPRESSED KERB TO SWALE/MANHOLE DETAILS Submission | 2026-02-08 → 2026-02-23 A (+15d) | 2026-02-11 → 2026-02-25 A (+14d) | 0% → 100% | 4d → none |
| SDR-2-ENG-SUB-M-1150 | BOX PIPE AND SWALE CONNECTION DETAILS Submission | 2026-02-08 → 2026-02-23 A (+15d) | 2026-02-11 → 2026-02-25 A (+14d) | 0% → 100% | 4d → none |
| 6 | **Sewerage Network** | 2026-02-08 → 2026-02-18 (+10d) | 2026-02-11 → 2026-02-25 (+14d) |  |  |
| SDR-2-ENG-SUB-M-1160 | Sewage Layout Master Plan Submission | 2026-02-08 → 2026-02-18 A (+10d) | 2026-02-11 → 2026-02-23 A (+12d) | 0% → 100% | 1d → none |
| SDR-2-ENG-SUB-M-1170 | Sewage Network Profile Submission | 2026-02-08 → 2026-02-18 A (+10d) | 2026-02-11 → 2026-02-23 A (+12d) | 0% → 100% | 1d → none |
| SDR-2-ENG-SUB-M-1180 | Sewage Network Standard Details Submission | 2026-02-08 → 2026-02-18 A (+10d) | 2026-02-11 → 2026-02-25 A (+14d) | 0% → 100% | 1d → none |
| SDR-2-ENG-SUB-M-1190 | Sewage Network Section Submission | 2026-02-08 → 2026-02-18 A (+10d) | 2026-02-11 → 2026-02-25 A (+14d) | 0% → 100% | 1d → none |
| 7 | **TSE Network** | 2026-02-08 → 2026-02-18 (+10d) | 2026-02-11 → 2026-02-25 (+14d) |  |  |
| SDR-2-ENG-SUB-M-1210 | TSE Network Profile Submission | 2026-02-08 → 2026-02-18 A (+10d) | 2026-02-11 → 2026-02-23 A (+12d) | 0% → 100% | 1d → none |
| SDR-2-ENG-SUB-M-1220 | TSE Network Standard Details Submission | 2026-02-08 → 2026-02-18 A (+10d) | 2026-02-11 → 2026-02-25 A (+14d) | 0% → 100% | 1d → none |
| SDR-2-ENG-SUB-M-1230 | TSE Network Section Submission | 2026-02-08 → 2026-02-18 A (+10d) | 2026-02-11 → 2026-02-25 A (+14d) | 0% → 100% | 1d → none |
| SDR-2-ENG-SUB-M-1200 | TSE Layout Master Plan Submission | 2026-02-08 → 2026-02-23 A (+15d) | 2026-02-11 → 2026-02-25 A (+14d) | 0% → 100% | 1d → none |
| 8 | **Portable Water** | 2026-02-08 → 2026-02-18 (+10d) | 2026-02-11 → 2026-02-25 (+14d) |  |  |
| SDR-2-ENG-SUB-M-1240 | Potable Water Piping Layout Master Plan Submission | 2026-02-08 → 2026-02-18 A (+10d) | 2026-02-11 → 2026-02-23 A (+12d) | 0% → 100% | 4d → none |
| SDR-2-ENG-SUB-M-1250 | Potable Water Piping Layout Submission | 2026-02-08 → 2026-02-18 A (+10d) | 2026-02-11 → 2026-02-23 A (+12d) | 0% → 100% | 4d → none |
| SDR-2-ENG-SUB-M-1260 | Potable Water Standard Details Submission | 2026-02-08 → 2026-02-18 A (+10d) | 2026-02-11 → 2026-02-25 A (+14d) | 0% → 100% | 4d → none |
| SDR-2-ENG-SUB-M-1270 | Potable Water Section Submission | 2026-02-08 → 2026-02-18 A (+10d) | 2026-02-11 → 2026-02-23 A (+12d) | 0% → 100% | 4d → none |
| 9 | **Electrical** | 2026-02-08 → 2026-02-16 (+8d) | 2026-02-11 → 2026-06-15 (+124d) |  |  |
| SDR-2-ENG-SUB-E-1000 | MV Network Layout Submission | 2026-02-08 → 2026-02-16 A (+8d) | 2026-02-11 → 2026-06-15 A (+124d) | 0% → 100% | 4d → none |
| SDR-2-ENG-SUB-E-1080 | Street Lighting Layout Submission | 2026-02-08 → 2026-02-16 A (+8d) | 2026-02-11 → 2026-02-17 A (+6d) | 0% → 100% | 4d → none |
| SDR-2-ENG-SUB-E-1090 | Single Line Diagram for Street Lighting Submission | 2026-02-08 → 2026-02-16 A (+8d) | 2026-02-11 → 2026-02-17 A (+6d) | 0% → 100% | 4d → none |
| SDR-2-ENG-SUB-E-1170 | Telecom Overall Layout Submission | 2026-02-08 → 2026-02-16 A (+8d) | 2026-02-11 → 2026-02-17 A (+6d) | 0% → 100% | 4d → none |
| SDR-2-ENG-SUB-E-1010 | MV Single Line Diagram Submission | 2026-02-08 → 2026-02-17 A (+9d) | 2026-02-11 → 2026-06-15 A (+124d) | 0% → 100% | 4d → none |
| SDR-2-ENG-SUB-E-1100 | Voltage Drop Calculations Submission | 2026-02-08 → 2026-02-17 A (+9d) | 2026-02-11 → 2026-02-18 A (+7d) | 0% → 100% | 4d → none |
| SDR-2-ENG-SUB-E-1180 | Typical Trenches Detail Submission | 2026-02-08 → 2026-02-17 A (+9d) | 2026-02-11 → 2026-02-18 A (+7d) | 0% → 100% | 4d → none |
| SDR-2-ENG-SUB-E-1020 | Design Of MV Loops Submission | 2026-02-08 → 2026-02-18 A (+10d) | 2026-02-11 → 2026-06-15 A (+124d) | 0% → 100% | 4d → none |
| SDR-2-ENG-SUB-E-1030 | Loads For Plots Submission | 2026-02-08 → 2026-02-18 A (+10d) | 2026-02-11 → 2026-06-15 A (+124d) | 0% → 100% | 4d → none |
| SDR-2-ENG-SUB-E-1040 | Distribution Substation Submission | 2026-02-08 → 2026-02-18 A (+10d) | 2026-02-11 → 2026-06-15 A (+124d) | 0% → 100% | 4d → none |
| SDR-2-ENG-SUB-E-1050 | MV Trench Configuration Details Submission | 2026-02-08 → 2026-02-18 A (+10d) | 2026-02-11 → 2026-06-15 A (+124d) | 0% → 100% | 4d → none |
| SDR-2-ENG-SUB-E-1060 | MV Electrical Duct Banks Details Submission | 2026-02-08 → 2026-02-18 A (+10d) | 2026-02-11 → 2026-06-15 A (+124d) | 0% → 100% | 4d → none |
| SDR-2-ENG-SUB-E-1070 | Distribution Transformers Submission | 2026-02-08 → 2026-02-18 A (+10d) | 2026-02-11 → 2026-06-15 A (+124d) | 0% → 100% | 4d → none |
| SDR-2-ENG-SUB-E-1110 | Construction Details Lighting Poles Submission | 2026-02-08 → 2026-02-18 A (+10d) | 2026-02-11 → 2026-02-23 A (+12d) | 0% → 100% | 4d → none |
| SDR-2-ENG-SUB-E-1120 | Base Plate Construction Details Submission | 2026-02-08 → 2026-02-18 A (+10d) | 2026-02-11 → 2026-02-23 A (+12d) | 0% → 100% | 4d → none |
| SDR-2-ENG-SUB-E-1190 | Typical Trenches Crossing Detail Submission | 2026-02-08 → 2026-02-18 A (+10d) | 2026-02-11 → 2026-02-23 A (+12d) | 0% → 100% | 4d → none |
| SDR-2-ENG-SUB-E-1200 | Manholes,Hand-Holes Details Submission | 2026-02-08 → 2026-02-18 A (+10d) | 2026-02-11 → 2026-02-23 A (+12d) | 0% → 100% | 4d → none |
| SDR-2-ENG-SUB-E-1210 | Typical Details Of Pock Out Ducts Submission | 2026-02-08 → 2026-02-18 A (+10d) | 2026-02-11 → 2026-02-23 A (+12d) | 0% → 100% | 4d → none |
| SDR-2-ENG-SUB-E-1130 | Lighting Pole Identification Submission | 2026-02-08 → 2026-02-23 A (+15d) | 2026-02-11 → 2026-02-25 A (+14d) | 0% → 100% | 4d → none |
| SDR-2-ENG-SUB-E-1140 | Typical Feeder Pillar and Timer Switch Details Submission | 2026-02-08 → 2026-02-23 A (+15d) | 2026-02-11 → 2026-02-25 A (+14d) | 0% → 100% | 4d → none |
| SDR-2-ENG-SUB-E-1150 | Public Lighting Draw-Pit Construction Details Submission | 2026-02-08 → 2026-02-23 A (+15d) | 2026-02-11 → 2026-02-25 A (+14d) | 0% → 100% | 4d → none |
| SDR-2-ENG-SUB-E-1160 | Concrete Earth Pit Construction Details Submission | 2026-02-08 → 2026-02-23 A (+15d) | 2026-02-11 → 2026-02-25 A (+14d) | 0% → 100% | 4d → none |
| 11 | **CCTV** | 2026-02-08 → 2026-02-16 (+8d) | 2026-02-11 → 2026-06-01 (+110d) |  |  |
| SDR-2-ENG-SUB-E-1220 | CCTV Overall Layout Submission | 2026-02-08 → 2026-02-16 A (+8d) | 2026-02-11 → 2026-06-01 A (+110d) | 0% → 100% | 4d → none |
| SDR-2-ENG-SUB-E-1230 | CCTV Control Room Layout Submission | 2026-02-08 → 2026-02-16 A (+8d) | 2026-02-11 → 2026-06-01 A (+110d) | 0% → 100% | 4d → none |
| SDR-2-ENG-SUB-E-1240 | CCTV System Schematic Drawing Submission | 2026-02-08 → 2026-02-16 A (+8d) | 2026-02-11 → 2026-06-01 A (+110d) | 0% → 100% | 4d → none |
| SDR-2-ENG-SUB-E-1250 | CCTV System 7 MTR Pole Installation Detail Submission | 2026-02-08 → 2026-02-16 A (+8d) | 2026-02-11 → 2026-06-01 A (+110d) | 0% → 100% | 4d → none |
| SDR-2-ENG-SUB-E-1260 | CCTV System 25 MTR Pole Installation Detail Submission | 2026-02-08 → 2026-02-16 A (+8d) | 2026-02-11 → 2026-06-01 A (+110d) | 0% → 100% | 4d → none |
| SDR-2-ENG-SUB-E-1270 | CCTV System 35 MTR Pole Installation Detail Submission | 2026-02-08 → 2026-02-16 A (+8d) | 2026-02-11 → 2026-06-01 A (+110d) | 0% → 100% | 4d → none |
| SDR-2-ENG-SUB-E-1280 | Typical Solar Panel Installation Detail Submission | 2026-02-08 → 2026-02-16 A (+8d) | 2026-02-11 → 2026-06-01 A (+110d) | 0% → 100% | 4d → none |
| 10 | **Landscape & Irrigation Works** | 2026-02-17 → 2026-02-18 (+1d) | 2026-02-21 → 2026-04-17 (+55d) |  |  |
| SDR-2-ENG-SUB-M-1280 | Irrigation Layout Master Plan Submission | 2026-02-17 → 2026-02-18 A (+1d) | 2026-02-21 → 2026-02-23 A (+2d) | 0% → 100% | 7d → none |
| SDR-2-ENG-SUB-M-1290 | Irrigation Network Profile Submission | 2026-02-17 → 2026-02-23 A (+6d) | 2026-02-21 → 2026-02-25 A (+4d) | 0% → 100% | 20d → none |
| SDR-2-ENG-SUB-M-1300 | Irrigation Network Standard Details Submission | 2026-02-17 → 2026-02-23 A (+6d) | 2026-02-21 → 2026-02-24 A (+3d) | 0% → 100% | 7d → none |
| SDR-2-ENG-SUB-M-1310 | Irrigation Network Section Submission | 2026-02-17 → 2026-02-23 A (+6d) | 2026-02-21 → 2026-02-24 A (+3d) | 0% → 100% | 7d → none |
| SDR-2-ENG-SUB-M-1320 | Landscape Layout Master Plan Submission | 2026-02-17 → 2026-02-23 A (+6d) | 2026-02-21 → 2026-04-17 A (+55d) | 0% → 100% | 7d → none |
| 4 | **Approvals** | 2026-02-12 → 2026-02-11 (-1d) | 2026-03-05 → 2026-09-28 (+207d) |  |  |
| 4 | **Road Works** | 2026-02-12 → 2026-02-11 (-1d) | 2026-02-24 → 2026-02-26 (+2d) |  |  |
| SDR-2-ENG-APP-C-1000 | DEMOLISH WORKS OVERALL PLAN Approval | 2026-02-12 → 2026-02-11 A (-1d) | 2026-02-24 → 2026-02-16 A (-8d) | 0% → 100% | 1d → none |
| SDR-2-ENG-APP-C-1010 | ROAD ZONES LAYOUT PLAN Approval | 2026-02-12 A | 2026-02-24 → 2026-02-17 A (-7d) | 0% → 100% | 1d → none |
| SDR-2-ENG-APP-C-1030 | TYPICAL ROAD CROSS SECTIONS Approval | 2026-02-12 A | 2026-02-24 → 2026-02-18 A (-6d) | 0% → 100% | 1d → none |
| SDR-2-ENG-APP-C-1020 | ROAD LAYOUT PLAN Approval | 2026-02-12 → 2026-02-15 A (+3d) | 2026-02-24 → 2026-02-19 A (-5d) | 0% → 100% | 1d → none |
| SDR-2-ENG-APP-C-1040 | GRADING TYPICAL CROSS SECTIONS Approval | 2026-02-12 → 2026-02-16 A (+4d) | 2026-02-24 → 2026-02-23 A (-1d) | 0% → 100% | 1d → none |

| ID | Task | Start | Finish | Complete | Total float |
| --- | --- | --- | --- | --- | --- |
| SDR-2-ENG-APP-C-1050 | ZONE A ROAD SETTING OUT PLAN Approval | 2026-02-12 → 2026-02-16 A (+4d) | 2026-02-24 → 2026-02-23 A (-1d) | 0% → 100% | 1d → none |
| SDR-2-ENG-APP-C-1060 | ZONE G ROAD SETTING OUT PLAN Approval | 2026-02-12 → 2026-02-16 A (+4d) | 2026-02-24 → 2026-02-23 A (-1d) | 0% → 100% | 1d → none |
| SDR-2-ENG-APP-C-1070 | TYPICAL PAVEMENT DETAILS Approval | 2026-02-12 → 2026-02-17 A (+5d) | 2026-02-24 → 2026-02-25 A (+1d) | 0% → 100% | 4d → none |
| SDR-2-ENG-APP-C-1080 | TYPICAL JUNCTION DETAIL LOCAL-1 & LOCAL-1 (40M ROW) Approval | 2026-02-12 → 2026-02-17 A (+5d) | 2026-02-24 → 2026-02-25 A (+1d) | 0% → 100% | 4d → none |
| SDR-2-ENG-APP-C-1090 | ROAD PROFILES (ZONE A) Approval | 2026-02-12 → 2026-02-17 A (+5d) | 2026-02-24 → 2026-02-25 A (+1d) | 0% → 100% | 1d → none |
| SDR-2-ENG-APP-C-1100 | ROAD PROFILES (ZONE G) Approval | 2026-02-12 → 2026-02-17 A (+5d) | 2026-02-24 → 2026-02-25 A (+1d) | 0% → 100% | 1d → none |
| SDR-2-ENG-APP-C-1110 | Overall Kerbing and Pavement Layout Approval | 2026-02-12 → 2026-02-17 A (+5d) | 2026-02-24 → 2026-02-25 A (+1d) | 0% → 100% | 4d → none |
| SDR-2-ENG-APP-C-1120 | Typical Concrete Kerb Details Approval | 2026-02-12 → 2026-02-18 A (+6d) | 2026-02-24 → 2026-02-26 A (+2d) | 0% → 100% | 4d → none |
| SDR-2-ENG-APP-C-1130 | Typical Pavement Details Approval | 2026-02-12 → 2026-02-18 A (+6d) | 2026-02-24 → 2026-02-26 A (+2d) | 0% → 100% | 4d → none |
| SDR-2-ENG-APP-C-1140 | Road Marking Layout Approval | 2026-02-12 → 2026-02-18 A (+6d) | 2026-02-24 → 2026-02-26 A (+2d) | 0% → 100% | 4d → none |
| SDR-2-ENG-APP-C-1150 | Road Marking Details Approval | 2026-02-12 → 2026-02-18 A (+6d) | 2026-02-24 → 2026-02-26 A (+2d) | 0% → 100% | 4d → none |
| SDR-2-ENG-APP-C-1160 | Road Marking And Signage Typical Standard Details Approval | 2026-02-12 → 2026-02-18 A (+6d) | 2026-02-24 → 2026-02-26 A (+2d) | 0% → 100% | 4d → none |
| SDR-2-ENG-APP-C-1170 | Standard Details Approval | 2026-02-12 → 2026-02-18 A (+6d) | 2026-02-24 → 2026-02-26 A (+2d) | 0% → 100% | 1d → none |
| SDR-2-ENG-APP-C-1180 | Site Safety Notice Board Approval | 2026-02-12 → 2026-02-18 A (+6d) | 2026-02-24 → 2026-02-26 A (+2d) | 0% → 100% | 1d → none |
| SDR-2-ENG-APP-C-1190 | Location Plan For Traffic Signage Approval | 2026-02-12 → 2026-02-18 A (+6d) | 2026-02-24 → 2026-02-26 A (+2d) | 0% → 100% | 4d → none |
| 5 | **Storm Water Drainage Network** | 2026-02-12 → 2026-02-16 (+4d) | 2026-02-24 → 2026-05-24 (+89d) |  |  |
| SDR-2-ENG-APP-M-1000 | Storm Drainage Master Plan Approval | 2026-02-12 → 2026-02-16 A (+4d) | 2026-02-24 → 2026-05-10 A (+75d) | 0% → 100% | 1d → none |
| SDR-2-ENG-APP-M-1010 | Storm Drainage Layout Approval | 2026-02-12 → 2026-02-16 A (+4d) | 2026-02-24 → 2026-05-10 A (+75d) | 0% → 100% | 20d → none |
| SDR-2-ENG-APP-M-1020 | Storm Network Profile Approval | 2026-02-12 → 2026-02-18 A (+6d) | 2026-02-24 → 2026-05-24 A (+89d) | 0% → 100% | 1d → none |
| SDR-2-ENG-APP-M-1050 | POND A LAYOUT AND PROFILE Approval | 2026-02-12 → 2026-02-23 A (+11d) | 2026-02-24 → 2026-05-17 A (+82d) | 0% → 100% | 1d → none |
| SDR-2-ENG-APP-M-1030 | Storm Network Standard Details Approval | 2026-02-12 → 2026-02-25 A (+13d) | 2026-02-24 → 2026-03-04 A (+8d) | 0% → 100% | 1d → none |
| SDR-2-ENG-APP-M-1040 | Storm Network Section Approval | 2026-02-12 → 2026-02-25 A (+13d) | 2026-02-24 → 2026-05-24 A (+89d) | 0% → 100% | 4d → none |
| SDR-2-ENG-APP-M-1060 | TYPICAL ENERGY DISSAPATION DETAILS Approval | 2026-02-12 → 2026-02-25 A (+13d) | 2026-02-24 → 2026-05-24 A (+89d) | 0% → 100% | 4d → none |
| SDR-2-ENG-APP-M-1070 | STORM WATER POND SIPHON PIPE DETAILS SApproval | 2026-02-12 → 2026-02-25 A (+13d) | 2026-02-24 → 2026-05-24 A (+89d) | 0% → 100% | 1d → none |
| SDR-2-ENG-APP-M-1080 | REINFORCEMENT CONCRETE WEIR AND GABION WALL DETAILS Approval | 2026-02-12 → 2026-02-25 A (+13d) | 2026-02-24 → 2026-05-24 A (+89d) | 0% → 100% | 4d → none |
| SDR-2-ENG-APP-M-1090 | TYPICAL TRENCH AND PIPE BEDDING DETAILS Approval | 2026-02-12 → 2026-02-25 A (+13d) | 2026-02-24 → 2026-04-06 A (+41d) | 0% → 100% | 4d → none |
| SDR-2-ENG-APP-M-1100 | FLUSH AND KERB INLET MANHOLE DETAILS Approval | 2026-02-12 → 2026-02-25 A (+13d) | 2026-02-24 → 2026-04-06 A (+41d) | 0% → 100% | 4d → none |
| SDR-2-ENG-APP-M-1110 | BOX PIPE CONNECTION AND BOX PIPE WIDENING DETAILS Approval | 2026-02-12 → 2026-02-25 A (+13d) | 2026-02-24 → 2026-05-24 A (+89d) | 0% → 100% | 4d → none |
| SDR-2-ENG-APP-M-1120 | TYPICAL BOX PIPE JUNCTION DETAILS Approval | 2026-02-12 → 2026-02-25 A (+13d) | 2026-02-24 → 2026-05-24 A (+89d) | 0% → 100% | 4d → none |
| SDR-2-ENG-APP-M-1130 | TYPICAL JUNCTION CHAMBER REINFORCEMENT DETAILS Approval | 2026-02-12 → 2026-02-25 A (+13d) | 2026-02-24 → 2026-05-24 A (+89d) | 0% → 100% | 4d → none |
| SDR-2-ENG-APP-M-1140 | DEPRESSED KERB TO SWALE/MANHOLE DETAILS Approval | 2026-02-12 → 2026-02-25 A (+13d) | 2026-02-24 → 2026-05-24 A (+89d) | 0% → 100% | 4d → none |
| SDR-2-ENG-APP-M-1150 | BOX PIPE AND SWALE CONNECTION DETAILS Approval | 2026-02-12 → 2026-02-25 A (+13d) | 2026-02-24 → 2026-05-24 A (+89d) | 0% → 100% | 4d → none |
| 6 | **Sewerage Network** | 2026-02-12 → 2026-02-23 (+11d) | 2026-02-24 → 2026-05-20 (+85d) |  |  |
| SDR-2-ENG-APP-M-1160 | Sewage Layout Master Plan Approval | 2026-02-12 → 2026-02-23 A (+11d) | 2026-02-24 → 2026-05-10 A (+75d) | 0% → 100% | 1d → none |
| SDR-2-ENG-APP-M-1170 | Sewage Network Profile Approval | 2026-02-12 → 2026-02-23 A (+11d) | 2026-02-24 → 2026-05-20 A (+85d) | 0% → 100% | 1d → none |
| SDR-2-ENG-APP-M-1180 | Sewage Network Standard Details Approval | 2026-02-12 → 2026-02-25 A (+13d) | 2026-02-24 → 2026-05-20 A (+85d) | 0% → 100% | 1d → none |
| SDR-2-ENG-APP-M-1190 | Sewage Network Section Approval | 2026-02-12 → 2026-02-25 A (+13d) | 2026-02-24 → 2026-05-20 A (+85d) | 0% → 100% | 1d → none |
| 7 | **TSE Network** | 2026-02-12 → 2026-02-23 (+11d) | 2026-02-24 → 2026-04-25 (+60d) |  |  |
| SDR-2-ENG-APP-M-1210 | TSE Network Profile Approval | 2026-02-12 → 2026-02-23 A (+11d) | 2026-02-24 → 2026-04-16 A (+51d) | 0% → 100% | 1d → none |
| SDR-2-ENG-APP-M-1220 | TSE Network Standard Details Approval | 2026-02-12 → 2026-02-25 A (+13d) | 2026-02-24 → 2026-04-23 A (+58d) | 0% → 100% | 1d → none |
| SDR-2-ENG-APP-M-1230 | TSE Network Section Approval | 2026-02-12 → 2026-02-25 A (+13d) | 2026-02-24 → 2026-04-25 A (+60d) | 0% → 100% | 1d → none |
| SDR-2-ENG-APP-M-1200 | TSE Layout Master Plan Approval | 2026-02-12 → 2026-02-25 A (+13d) | 2026-02-24 → 2026-04-14 A (+49d) | 0% → 100% | 1d → none |
| 8 | **Portable Water** | 2026-02-12 → 2026-02-23 (+11d) | 2026-02-24 → 2026-05-20 (+85d) |  |  |
| SDR-2-ENG-APP-M-1240 | Potable Water Piping Layout Master Plan Approval | 2026-02-12 → 2026-02-23 A (+11d) | 2026-02-24 → 2026-04-29 A (+64d) | 0% → 100% | 4d → none |
| SDR-2-ENG-APP-M-1250 | Potable Water Piping Layout Approval | 2026-02-12 → 2026-02-23 A (+11d) | 2026-02-24 → 2026-04-29 A (+64d) | 0% → 100% | 4d → none |
| SDR-2-ENG-APP-M-1270 | Potable Water Section Approval | 2026-02-12 → 2026-02-23 A (+11d) | 2026-02-24 → 2026-05-20 A (+85d) | 0% → 100% | 4d → none |
| SDR-2-ENG-APP-M-1260 | Potable Water Standard Details Approval | 2026-02-12 → 2026-02-25 A (+13d) | 2026-02-24 → 2026-05-20 A (+85d) | 0% → 100% | 4d → none |
| 9 | **Electrical** | 2026-02-12 → 2026-02-17 (+5d) | 2026-02-24 → 2026-09-28 (+216d) |  |  |
| SDR-2-ENG-APP-E-1080 | Street Lighting Layout Approval | 2026-02-12 → 2026-02-17 A (+5d) | 2026-02-24 → 2026-03-05 A (+9d) | 0% → 100% | 4d → none |
| SDR-2-ENG-APP-E-1090 | Single Line Diagram for Street Lighting Approval | 2026-02-12 → 2026-02-17 A (+5d) | 2026-02-24 → 2026-04-22 A (+57d) | 0% → 100% | 4d → none |
| SDR-2-ENG-APP-E-1170 | Telecom Overall Layout Approval | 2026-02-12 → 2026-02-17 A (+5d) | 2026-02-24 → 2026-04-26 A (+61d) | 0% → 100% | 4d → none |
| SDR-2-ENG-APP-E-1100 | Voltage Drop Calculations Approval | 2026-02-12 → 2026-02-18 A (+6d) | 2026-02-24 → 2026-03-05 A (+9d) | 0% → 100% | 4d → none |
| SDR-2-ENG-APP-E-1180 | Typical Trenches Detail Approval | 2026-02-12 → 2026-02-18 A (+6d) | 2026-02-24 → 2026-04-20 A (+55d) | 0% → 100% | 4d → none |
| SDR-2-ENG-APP-E-1190 | Typical Trenches Crossing Detail Approval | 2026-02-12 → 2026-02-23 A (+11d) | 2026-02-24 → 2026-04-26 A (+61d) | 0% → 100% | 4d → none |
| SDR-2-ENG-APP-E-1200 | Manholes,Hand-Holes Details Approval | 2026-02-12 → 2026-02-23 A (+11d) | 2026-02-24 → 2026-05-12 A (+77d) | 0% → 100% | 4d → none |
| SDR-2-ENG-APP-E-1210 | Typical Details Of Pock Out Ducts Approval | 2026-02-12 → 2026-02-23 A (+11d) | 2026-02-24 → 2026-05-13 A (+78d) | 0% → 100% | 4d → none |
| SDR-2-ENG-APP-E-1110 | Construction Details Lighting Poles Approval | 2026-02-12 → 2026-02-23 A (+11d) | 2026-02-24 → 2026-03-02 A (+6d) | 0% → 100% | 4d → none |
| SDR-2-ENG-APP-E-1120 | Base Plate Construction Details Approval | 2026-02-12 → 2026-02-23 A (+11d) | 2026-02-24 → 2026-03-02 A (+6d) | 0% → 100% | 4d → none |
| SDR-2-ENG-APP-E-1130 | Lighting Pole Identification Approval | 2026-02-12 → 2026-02-25 A (+13d) | 2026-02-24 → 2026-03-04 A (+8d) | 0% → 100% | 4d → none |
| SDR-2-ENG-APP-E-1140 | Typical Feeder Pillar and Timer Switch Details Approval | 2026-02-12 → 2026-02-25 A (+13d) | 2026-02-24 → 2026-03-04 A (+8d) | 0% → 100% | 4d → none |
| SDR-2-ENG-APP-E-1150 | Public Lighting Draw-Pit Construction Details Approval | 2026-02-12 → 2026-02-25 A (+13d) | 2026-02-24 → 2026-03-04 A (+8d) | 0% → 100% | 4d → none |
| SDR-2-ENG-APP-E-1160 | Concrete Earth Pit Construction Details Approval | 2026-02-12 → 2026-02-25 A (+13d) | 2026-02-24 → 2026-03-04 A (+8d) | 0% → 100% | 4d → none |
| SDR-2-ENG-APP-E-1000 | MV Network Layout Approval | 2026-02-12 → 2026-06-15 A (+123d) | 2026-02-24 → 2026-09-28 (+216d) |  | 4d → 2d |
| SDR-2-ENG-APP-E-1010 | MV Single Line Diagram Approval | 2026-02-12 → 2026-06-15 A (+123d) | 2026-02-24 → 2026-09-28 (+216d) |  | 4d → 2d |
| SDR-2-ENG-APP-E-1020 | Design Of MV Loops Approval | 2026-02-12 → 2026-06-15 A (+123d) | 2026-02-24 → 2026-09-28 (+216d) |  | 4d → 2d |
| SDR-2-ENG-APP-E-1030 | Loads For Plots Approval | 2026-02-12 → 2026-06-15 A (+123d) | 2026-02-24 → 2026-09-28 (+216d) |  | 4d → 2d |
| SDR-2-ENG-APP-E-1040 | Distribution Substation Approval | 2026-02-12 → 2026-06-15 A (+123d) | 2026-02-24 → 2026-09-28 (+216d) |  | 4d → 2d |
| SDR-2-ENG-APP-E-1050 | MV Trench Configuration Details Approval | 2026-02-12 → 2026-06-15 A (+123d) | 2026-02-24 → 2026-09-28 (+216d) |  | 4d → 2d |
| SDR-2-ENG-APP-E-1060 | MV Electrical Duct Banks Details Approval | 2026-02-12 → 2026-06-15 A (+123d) | 2026-02-24 → 2026-09-28 (+216d) |  | 4d → 2d |
| SDR-2-ENG-APP-E-1070 | Distribution Transformers Approval | 2026-02-12 → 2026-06-15 A (+123d) | 2026-02-24 → 2026-09-28 (+216d) |  | 4d → 2d |

| ID | Task | Start | Finish | Complete | Total float | Predecessors |
| --- | --- | --- | --- | --- | --- | --- |
| 11 | **CCTV** | 2026-02-12 → 2026-06-11 (+119d) | 2026-02-24 → 2026-09-28 (+216d) |  |  |  |
| SDR-2-ENG-APP-E-1250 | CCTV System 7 MTR Pole Installation Detail Approval | 2026-02-12 → 2026-06-11 A (+119d) | 2026-02-24 → 2026-06-15 A (+111d) | 0% → 100% | 4d → none |  |
| SDR-2-ENG-APP-E-1260 | CCTV System 25 MTR Pole Installation Detail Approval | 2026-02-12 → 2026-06-11 A (+119d) | 2026-02-24 → 2026-06-15 A (+111d) | 0% → 100% | 4d → none |  |
| SDR-2-ENG-APP-E-1270 | CCTV System 35 MTR Pole Installation Detail Approval | 2026-02-12 → 2026-06-11 A (+119d) | 2026-02-24 → 2026-06-15 A (+111d) | 0% → 100% | 4d → none |  |
| SDR-2-ENG-APP-E-1220 | CCTV Overall Layout Approval | 2026-02-12 → 2026-06-15 A (+123d) | 2026-02-24 → 2026-06-28 A (+124d) | 0% → 100% | 4d → none |  |
| SDR-2-ENG-APP-E-1230 | CCTV Control Room Layout Approval | 2026-02-12 → 2026-06-15 A (+123d) | 2026-02-24 → 2026-08-05 A (+162d) | 0% → 100% | 4d → none |  |
| SDR-2-ENG-APP-E-1240 | CCTV System Schematic Drawing Approval | 2026-02-12 → 2026-06-15 A (+123d) | 2026-02-24 → 2026-08-05 A (+162d) | 0% → 100% | 4d → none |  |
| SDR-2-ENG-APP-E-1280 | Typical Solar Panel Installation Detail Approval | 2026-02-12 → 2026-06-15 A (+123d) | 2026-02-24 → 2026-09-28 (+216d) |  | 4d → 2d |  |
| 10 | **Landscape & Irrigation Works** | 2026-02-22 → 2026-02-23 (+1d) | 2026-03-05 → 2026-06-08 (+95d) |  |  |  |
| SDR-2-ENG-APP-M-1280 | Irrigation Layout Master Plan Approval | 2026-02-22 → 2026-02-23 A (+1d) | 2026-03-05 → 2026-04-28 A (+54d) | 0% → 100% | 7d → none |  |
| SDR-2-ENG-APP-M-1300 | Irrigation Network Standard Details Approval | 2026-02-22 → 2026-02-24 A (+2d) | 2026-03-05 → 2026-04-28 A (+54d) | 0% → 100% | 7d → none |  |
| SDR-2-ENG-APP-M-1310 | Irrigation Network Section Approval | 2026-02-22 → 2026-02-24 A (+2d) | 2026-03-05 → 2026-06-08 A (+95d) | 0% → 100% | 7d → none |  |
| SDR-2-ENG-APP-M-1290 | Irrigation Network Profile Approval | 2026-02-22 → 2026-02-25 A (+3d) | 2026-03-05 → 2026-04-28 A (+54d) | 0% → 100% | 20d → none |  |
| SDR-2-ENG-APP-M-1320 | Landscape Layout Master Plan Approval | 2026-02-22 → 2026-04-17 A (+54d) | 2026-03-05 → 2026-05-20 A (+76d) | 0% → 100% | 7d → none |  |
| 3 | **Materials** | 2026-02-25 → 2026-02-09 (-16d) | 2026-03-05 → 2026-09-28 (+207d) |  |  |  |
| 5 | **Materials Submission** | 2026-02-25 → 2026-02-09 (-16d) | 2026-02-28 → 2026-05-05 (+66d) |  |  |  |
| 2 | **Short Lead Items** | 2026-02-25 → 2026-02-09 (-16d) | 2026-02-26 → 2026-05-05 (+68d) |  |  |  |
| 2 | **Civil** | 2026-02-25 → 2026-02-09 (-16d) |  |  |  |  |
| SDR-2-PRO-MSS-C-1000 | Earth works material submission | 2026-02-25 → 2026-02-09 A (-16d) | 2026-02-26 → 2026-02-10 A (-16d) | 0% → 100% | 1d → none |  |
| SDR-2-PRO-MSS-C-1010 | Ready mix concrete submission | 2026-02-25 → 2026-02-11 A (-14d) | 2026-02-26 → 2026-02-12 A (-14d) | 0% → 100% | 4d → none |  |
| SDR-2-PRO-MSS-C-1040 | Kerbstone submission | 2026-02-25 → 2026-02-11 A (-14d) | 2026-02-26 → 2026-02-12 A (-14d) | 0% → 100% | 4d → none |  |
| SDR-2-PRO-MSS-C-1020 | Asphalt Mix submission | 2026-02-25 → 2026-02-14 A (-11d) | 2026-02-26 → 2026-02-15 A (-11d) | 0% → 100% | 4d → none |  |
| SDR-2-PRO-MSS-C-1030 | Road Marking submission | 2026-02-25 → 2026-02-16 A (-9d) | 2026-02-26 → 2026-02-17 A (-9d) | 0% → 100% | 4d → none |  |
| SDR-2-PRO-MSS-C-1050 | Interlock Tiles submission | 2026-02-25 → 2026-02-16 A (-9d) | 2026-02-26 → 2026-02-18 A (-8d) | 0% → 100% | 4d → none |  |
| SDR-2-PRO-MSS-C-1060 | Traffic Signage submission | 2026-02-25 → 2026-02-19 A (-6d) | 2026-02-26 → 2026-02-23 A (-3d) | 0% → 100% | 4d → none |  |
| SDR-2-PRO-MSS-C-1070 | Construction material submission | 2026-02-25 → 2026-02-19 A (-6d) | 2026-02-26 → 2026-02-23 A (-3d) | 0% → 100% | 4d → none |  |
| SDR-2-PRO-MSS-C-1090 | Protection Bollards for CCTV Pole submission | 2026-02-25 → 2026-02-19 A (-6d) | 2026-02-26 → 2026-02-24 A (-2d) | 0% → 100% | 4d → none |  |
| SDR-2-PRO-MSS-C-1100 | Protection (Guard rail) for Fire hydrant submission | 2026-02-25 → 2026-02-19 A (-6d) | 2026-02-26 → 2026-02-24 A (-2d) | 0% → 100% | 4d → none |  |
| SDR-2-PRO-MSS-C-1080 | Fence for Electrical works submission | 2026-02-25 → 2026-02-23 A (-2d) | 2026-02-26 A | 0% → 100% | 4d → none |  |
| 4 | **Electrical** | 2026-02-25 → 2026-02-09 (-16d) | 2026-02-26 → 2026-02-15 (-11d) |  |  |  |
| SDR-2-PRO-MSS-E-1000 | Termination Kits & Joints submission | 2026-02-25 → 2026-02-09 A (-16d) | 2026-02-26 → 2026-02-10 A (-16d) | 0% → 100% | 4d → none |  |
| SDR-2-PRO-MSS-E-1010 | UPVC Ducts & HDPE Ducts for Telecom network submission | 2026-02-25 → 2026-02-11 A (-14d) | 2026-02-26 → 2026-02-12 A (-14d) | 0% → 100% | 4d → none | SDR-2-ENG-APP-E-1010 → SDR-2-ENG-APP-E-1010 SS |
| SDR-2-PRO-MSS-E-1020 | Grounding System submission | 2026-02-25 → 2026-02-14 A (-11d) | 2026-02-26 → 2026-02-15 A (-11d) | 0% → 100% | 4d → none | SDR-2-ENG-APP-E-1000 → SDR-2-ENG-APP-E-1000 SS |
| 5 | **CCTV** | 2026-02-25 → 2026-02-16 (-9d) | 2026-02-26 → 2026-05-05 (+68d) |  |  |  |
| SDR-2-PRO-MSS-E-1030 | PECD Ducts for CCTV network submission | 2026-02-25 → 2026-02-16 A (-9d) | 2026-02-26 → 2026-05-05 A (+68d) | 0% → 100% | 4d → none |  |
| 1 | **Long Lead Items** | 2026-02-25 → 2026-02-09 (-16d) | 2026-02-28 → 2026-04-21 (+52d) |  |  |  |
| 2 | **Mechanical** | 2026-02-25 → 2026-02-09 (-16d) | 2026-02-26 → 2026-02-25 (-1d) |  |  |  |
| SDR-2-PRO-MSL-M-1000 | GRP Pipes & UPVC Pipes &Fittings submission | 2026-02-25 → 2026-02-09 A (-16d) | 2026-02-26 → 2026-02-10 A (-16d) | 0% → 100% | 1d → none |  |
| SDR-2-PRO-MSL-M-1010 | HDPE Pipes & Fittings submission | 2026-02-25 → 2026-02-11 A (-14d) | 2026-02-26 → 2026-02-12 A (-14d) | 0% → 100% | 4d → none |  |
| SDR-2-PRO-MSL-M-1020 | Valves submission | 2026-02-25 → 2026-02-11 A (-14d) | 2026-02-26 → 2026-02-12 A (-14d) | 0% → 100% | 4d → none |  |
| SDR-2-PRO-MSL-M-1030 | Manhole submission | 2026-02-25 → 2026-02-14 A (-11d) | 2026-02-26 → 2026-02-15 A (-11d) | 0% → 100% | 4d → none |  |
| SDR-2-PRO-MSL-M-1040 | Catch Basin submission | 2026-02-25 → 2026-02-16 A (-9d) | 2026-02-26 → 2026-02-17 A (-9d) | 0% → 100% | 4d → none |  |
| SDR-2-PRO-MSL-M-1050 | Manhole, Catch basin and Valve box Cover submission | 2026-02-25 → 2026-02-18 A (-7d) | 2026-02-26 → 2026-02-21 A (-5d) | 0% → 100% | 4d → none |  |
| SDR-2-PRO-MSL-M-1060 | Fire Hydrant submission | 2026-02-25 → 2026-02-21 A (-4d) | 2026-02-26 → 2026-02-25 A (-1d) | 0% → 100% | 4d → none |  |
| SDR-2-PRO-MSL-M-1070 | Valve of Fire Hydrant submission | 2026-02-25 → 2026-02-21 A (-4d) | 2026-02-26 → 2026-02-25 A (-1d) | 0% → 100% | 4d → none |  |
| 3 | **Electrical** | 2026-02-25 → 2026-02-09 (-16d) | 2026-02-28 → 2026-04-21 (+52d) |  |  |  |
| SDR-2-PRO-MSL-E-1000 | MV Cables submission | 2026-02-25 → 2026-02-09 A (-16d) | 2026-02-26 → 2026-02-10 A (-16d) | 0% → 100% | 4d → none | SDR-2-ENG-APP-E-1000, SDR-2-ENG-APP-E-1020, SDR-2-ENG-APP-E-1050 → SDR-2-ENG-APP-E-1000 SS, SDR-2-ENG-APP-E-1020 SS, SDR-2-ENG-APP-E-1050 SS |
| SDR-2-PRO-MSL-E-1010 | LV Cables submission | 2026-02-25 → 2026-02-11 A (-14d) | 2026-02-26 → 2026-02-12 A (-14d) | 0% → 100% | 4d → none | SDR-2-ENG-APP-E-1040, SDR-2-ENG-APP-E-1030, SDR-2-ENG-APP-E-1100, SDR-2-ENG-APP-E-1160, SDR-2-ENG-APP-E-1170, SDR-2-ENG-APP-E-1190, SDR-2-ENG-APP-E-1210 → SDR-2-ENG-APP-E-1100, SDR-2-ENG-APP-E-1160, SDR-2-ENG-APP-E-1170, SDR-2-ENG-APP-E-1190, SDR-2-ENG-APP-E-1210, SDR-2-ENG-APP-E-1040 SS, SDR-2-ENG-APP-E-1030 SS |
| SDR-2-PRO-MSL-E-1020 | Street Lighting Poles submission | 2026-02-25 → 2026-02-11 A (-14d) | 2026-02-26 → 2026-02-12 A (-14d) | 0% → 100% | 4d → none |  |
| SDR-2-PRO-MSL-E-1030 | Street Lighting Fixtures submission | 2026-02-25 → 2026-02-11 A (-14d) | 2026-02-26 → 2026-02-12 A (-14d) | 0% → 100% | 4d → none |  |
| SDR-2-PRO-MSL-E-1040 | DrawPits for Lighting submission | 2026-02-25 → 2026-02-11 A (-14d) | 2026-02-26 → 2026-02-12 A (-14d) | 0% → 100% | 4d → none |  |
| SDR-2-PRO-MSL-E-1050 | Concrete Manholes & DrawPits for Telecom Network submission | 2026-02-25 → 2026-02-14 A (-11d) | 2026-02-26 → 2026-02-15 A (-11d) | 0% → 100% | 4d → none |  |
| SDR-2-PRO-MSL-E-1180 | CCTV Wireless P2P bridges submission | 2026-02-25 → 2026-02-15 A (-10d) | 2026-02-26 → 2026-04-21 A (+54d) | 0% → 100% | 4d → none |  |
| SDR-2-PRO-MSL-E-1060 | Switchgears - (RMUs) submission | 2026-02-25 → 2026-02-16 A (-9d) | 2026-02-26 → 2026-02-17 A (-9d) | 0% → 100% | 4d → none | SDR-2-ENG-APP-E-1040 → SDR-2-ENG-APP-E-1040 SS |
| SDR-2-PRO-MSL-E-1070 | Unit Substation submission | 2026-02-25 → 2026-02-16 A (-9d) | 2026-02-26 → 2026-02-17 A (-9d) | 0% → 100% | 4d → none | SDR-2-ENG-APP-E-1040, SDR-2-ENG-APP-E-1070 → SDR-2-ENG-APP-E-1040 SS, SDR-2-ENG-APP-E-1070 SS |
| SDR-2-PRO-MSL-E-1080 | Lighting Panels submission | 2026-02-25 → 2026-02-16 A (-9d) | 2026-02-26 → 2026-02-17 A (-9d) | 0% → 100% | 4d → none |  |
| SDR-2-PRO-MSL-E-1090 | KWH Meter with mounting frame submission | 2026-02-25 → 2026-02-16 A (-9d) | 2026-02-26 → 2026-02-17 A (-9d) | 0% → 100% | 4d → none |  |
| SDR-2-PRO-MSL-E-1100 | Main Feeder Pillar submission | 2026-02-25 → 2026-02-16 A (-9d) | 2026-02-26 → 2026-02-17 A (-9d) | 0% → 100% | 4d → none |  |
| SDR-2-PRO-MSL-E-1190 | CCTV UPS submission | 2026-02-25 → 2026-02-17 A (-8d) | 2026-02-26 → 2026-04-21 A (+54d) | 0% → 100% | 4d → none |  |
| SDR-2-PRO-MSL-E-1110 | CCTV Poles including all hardwares submission | 2026-02-25 → 2026-02-18 A (-7d) | 2026-02-26 → 2026-04-21 A (+54d) | 0% → 100% | 4d → none |  |
| SDR-2-PRO-MSL-E-1120 | CCTV Cables "Power" submission | 2026-02-25 → 2026-02-18 A (-7d) | 2026-02-26 → 2026-04-21 A (+54d) | 0% → 100% | 4d → none | SDR-2-ENG-APP-E-1220, SDR-2-ENG-APP-E-1270, SDR-2-ENG-APP-E-1060 → SDR-2-ENG-APP-E-1220, SDR-2-ENG-APP-E-1270, SDR-2-ENG-APP-E-1060 SS |
| SDR-2-PRO-MSL-E-1130 | CCTV Cables "CAT6" submission | 2026-02-25 → 2026-02-18 A (-7d) | 2026-02-26 → 2026-04-21 A (+54d) | 0% → 100% | 4d → none |  |
| SDR-2-PRO-MSL-E-1200 | CCTV Solar System submission | 2026-02-25 → 2026-02-19 A (-6d) | 2026-02-26 → 2026-04-21 A (+54d) | 0% → 100% | 20d → none | SDR-2-ENG-APP-E-1280 → SDR-2-ENG-APP-E-1280 SS |
| SDR-2-PRO-MSL-E-1140 | Racks and Patch panels submission | 2026-02-25 → 2026-02-21 A (-4d) | 2026-02-26 → 2026-04-21 A (+54d) | 0% → 100% | 4d → none | SDR-2-ENG-APP-E-1280 → SDR-2-ENG-APP-E-1280 SS |
| SDR-2-PRO-MSL-E-1150 | CCTV System,Servers & WorkStations submission | 2026-02-25 → 2026-02-21 A (-4d) | 2026-02-26 → 2026-04-21 A (+54d) | 0% → 100% | 4d → none |  |
| SDR-2-PRO-MSL-E-1160 | Professional 55" Video wall at control room submission | 2026-02-25 → 2026-02-21 A (-4d) | 2026-02-26 → 2026-04-21 A (+54d) | 0% → 100% | 23d → none |  |
| SDR-2-PRO-MSL-E-1170 | CCTV Switches submission | 2026-02-25 → 2026-02-21 A (-4d) | 2026-02-28 → 2026-04-21 A (+52d) | 0% → 100% | 23d → none |  |
| 6 | **Materials Approval** | 2026-02-28 → 2026-02-09 (-19d) | 2026-03-05 → 2026-09-28 (+207d) |  |  |  |
| 2 | **Short Lead Items** | 2026-02-28 → 2026-02-09 (-19d) | 2026-03-05 → 2026-09-28 (+207d) |  |  |  |
| 1 | **Civil** | 2026-02-28 → 2026-02-09 (-19d) | 2026-03-05 → 2026-09-28 (+207d) |  |  |  |

| ID | Task | Start | Finish | Complete | Total float | Predecessors |
| --- | --- | --- | --- | --- | --- | --- |
| SDR-2-PRO-MAS-C-1000 | Earth works material Approve | 2026-02-28 → 2026-02-09 A (-19d) | 2026-03-02 → 2026-03-12 A (+10d) | 0% → 100% | 1d → none |  |
| SDR-2-PRO-MAS-C-1010 | Ready mix concrete Approve | 2026-02-28 → 2026-02-14 A (-14d) | 2026-03-02 → 2026-05-31 A (+90d) | 0% → 100% | 4d → none |  |
| SDR-2-PRO-MAS-C-1040 | Kerbstone Approve | 2026-02-28 → 2026-02-14 A (-14d) | 2026-03-02 → 2026-04-01 A (+30d) | 0% → 100% | 4d → none |  |
| SDR-2-PRO-MAS-C-1020 | Asphalt Mix Approve | 2026-03-03 → 2026-02-16 A (-15d) | 2026-03-05 → 2026-06-09 A (+96d) | 0% → 100% | 1d → none |  |
| SDR-2-PRO-MAS-C-1030 | Road Marking Approve | 2026-02-28 → 2026-02-18 A (-10d) | 2026-03-02 → 2026-09-28 (+210d) |  | 4d → 2d |  |
| SDR-2-PRO-MAS-C-1050 | Interlock Tiles Approve | 2026-02-28 → 2026-02-19 A (-9d) | 2026-03-02 → 2026-04-01 A (+30d) | 0% → 100% | 4d → none |  |
| SDR-2-PRO-MAS-C-1060 | Traffic Signage Approve | 2026-02-28 → 2026-02-23 A (-5d) | 2026-03-02 → 2026-09-28 (+210d) |  | 4d → 2d |  |
| SDR-2-PRO-MAS-C-1070 | Construction material Approve | 2026-02-28 → 2026-02-23 A (-5d) | 2026-03-02 → 2026-06-08 A (+98d) | 0% → 100% | 4d → none |  |
| SDR-2-PRO-MAS-C-1090 | Protection Bollards for CCTV Pole Approve | 2026-02-28 → 2026-02-24 A (-4d) | 2026-03-02 → 2026-06-02 A (+92d) | 0% → 100% | 4d → none |  |
| SDR-2-PRO-MAS-C-1100 | Protection (Guard rail) for Fire hydrant Approve | 2026-02-28 → 2026-02-24 A (-4d) | 2026-03-02 → 2026-06-02 A (+92d) | 0% → 100% | 4d → none |  |
| SDR-2-PRO-MAS-C-1080 | Fence for Electrical works Approve | 2026-02-28 → 2026-02-27 A (-1d) | 2026-03-02 → 2026-06-01 A (+91d) | 0% → 100% | 4d → none |  |
| 3 | **Electrical** | 2026-02-28 → 2026-02-11 (-17d) | 2026-03-02 → 2026-06-01 (+91d) |  |  |  |
| SDR-2-PRO-MAS-E-1000 | Termination Kits & Joints Approve | 2026-02-28 → 2026-02-11 A (-17d) | 2026-03-02 → 2026-05-13 A (+72d) | 0% → 100% | 4d → none |  |
| SDR-2-PRO-MAS-E-1010 | UPVC Ducts & HDPE Ducts for Telecom network Approve | 2026-02-28 → 2026-02-14 A (-14d) | 2026-03-02 → 2026-04-05 A (+34d) | 0% → 100% | 4d → none |  |
| SDR-2-PRO-MAS-E-1020 | Grounding System Approve | 2026-02-28 → 2026-02-16 A (-12d) | 2026-03-02 → 2026-04-18 A (+47d) | 0% → 100% | 4d → none |  |
| SDR-2-PRO-MAS-E-1030 | PECD Ducts for CCTV network Approve | 2026-02-28 → 2026-02-18 A (-10d) | 2026-03-02 → 2026-06-01 A (+91d) | 0% → 100% | 4d → none |  |
| 1 | **Long Lead Items** | 2026-02-28 → 2026-02-11 (-17d) | 2026-03-05 → 2026-05-21 (+77d) |  |  |  |
| 2 | **Mechanical** | 2026-02-28 → 2026-02-11 (-17d) | 2026-03-05 → 2026-03-01 (-4d) |  |  |  |
| SDR-2-PRO-MAL-M-1000 | GRP Pipes & UPVC Pipes & Fittings Approve | 2026-02-28 → 2026-02-11 A (-17d) | 2026-03-02 → 2026-02-14 A (-16d) | 0% → 100% | 1d → none |  |
| SDR-2-PRO-MAL-M-1010 | HDPE Pipes & Fittings Approve | 2026-02-28 → 2026-02-14 A (-14d) | 2026-03-02 → 2026-02-16 A (-14d) | 0% → 100% | 4d → none |  |
| SDR-2-PRO-MAL-M-1020 | Valves Approve | 2026-02-28 → 2026-02-14 A (-14d) | 2026-03-02 → 2026-02-16 A (-14d) | 0% → 100% | 4d → none |  |
| SDR-2-PRO-MAL-M-1030 | Manhole Approve | 2026-03-03 → 2026-02-16 A (-15d) | 2026-03-05 → 2026-02-19 A (-14d) | 0% → 100% | 1d → none |  |
| SDR-2-PRO-MAL-M-1040 | Catch Basin Approve | 2026-02-28 → 2026-02-18 A (-10d) | 2026-03-02 → 2026-02-24 A (-6d) | 0% → 100% | 4d → none |  |
| SDR-2-PRO-MAL-M-1050 | Manhole, Catch basin and Valve box Cover Approve | 2026-02-28 → 2026-02-21 A (-7d) | 2026-03-02 → 2026-02-27 A (-3d) | 0% → 100% | 4d → none |  |
| SDR-2-PRO-MAL-M-1060 | Fire Hydrant Approve | 2026-02-28 → 2026-02-26 A (-2d) | 2026-03-02 → 2026-03-01 A (-1d) | 0% → 100% | 4d → none |  |
| SDR-2-PRO-MAL-M-1070 | Valve of Fire Hydrant Approve | 2026-02-28 → 2026-02-26 A (-2d) | 2026-03-02 → 2026-03-01 A (-1d) | 0% → 100% | 4d → none |  |
| 3 | **Electrical** | 2026-02-28 → 2026-02-11 (-17d) | 2026-03-05 → 2026-05-21 (+77d) |  |  |  |
| SDR-2-PRO-MAL-E-1000 | MV Cables Approve | 2026-02-28 → 2026-02-11 A (-17d) | 2026-03-02 → 2026-02-14 A (-16d) | 0% → 100% | 4d → none |  |
| SDR-2-PRO-MAL-E-1010 | LV Cables Approve | 2026-02-28 → 2026-02-14 A (-14d) | 2026-03-02 → 2026-02-16 A (-14d) | 0% → 100% | 4d → none |  |
| SDR-2-PRO-MAL-E-1020 | Street Lighting Poles Approve | 2026-02-28 → 2026-02-14 A (-14d) | 2026-03-02 → 2026-04-20 A (+49d) | 0% → 100% | 4d → none |  |
| SDR-2-PRO-MAL-E-1030 | Street Lighting Fixtures Approve | 2026-02-28 → 2026-02-14 A (-14d) | 2026-03-02 → 2026-04-20 A (+49d) | 0% → 100% | 4d → none |  |
| SDR-2-PRO-MAL-E-1040 | DrawPits for Lighting Approve | 2026-02-28 → 2026-02-14 A (-14d) | 2026-03-02 → 2026-04-20 A (+49d) | 0% → 100% | 4d → none |  |
| SDR-2-PRO-MAL-E-1050 | Concrete Manholes & DrawPits for Telecom Network Approve | 2026-02-28 → 2026-02-16 A (-12d) | 2026-03-02 → 2026-05-12 A (+71d) | 0% → 100% | 4d → none |  |
| SDR-2-PRO-MAL-E-1060 | Switchgears - (RMUs) Approve | 2026-02-28 → 2026-02-18 A (-10d) | 2026-03-02 → 2026-04-05 A (+34d) | 0% → 100% | 4d → none |  |
| SDR-2-PRO-MAL-E-1070 | Unit Substation Approve | 2026-02-28 → 2026-02-18 A (-10d) | 2026-03-02 → 2026-05-12 A (+71d) | 0% → 100% | 4d → none |  |
| SDR-2-PRO-MAL-E-1080 | Lighting Panels Approve | 2026-02-28 → 2026-02-18 A (-10d) | 2026-03-02 → 2026-05-12 A (+71d) | 0% → 100% | 4d → none |  |
| SDR-2-PRO-MAL-E-1090 | KWH Meter with mounting frame Approve | 2026-02-28 → 2026-02-18 A (-10d) | 2026-03-02 → 2026-05-21 A (+80d) | 0% → 100% | 4d → none |  |
| SDR-2-PRO-MAL-E-1100 | Main Feeder Pillar Approve | 2026-02-28 → 2026-02-18 A (-10d) | 2026-03-02 → 2026-05-13 A (+72d) | 0% → 100% | 4d → none |  |
| SDR-2-PRO-MAL-E-1130 | CCTV Cables "CAT6" Approve | 2026-02-28 → 2026-04-22 A (+53d) | 2026-03-02 → 2026-04-29 A (+58d) | 0% → 100% | 4d → none |  |
| SDR-2-PRO-MAL-E-1140 | Racks and Patch panels Approve Approve | 2026-02-28 → 2026-04-22 A (+53d) | 2026-03-02 → 2026-04-29 A (+58d) | 0% → 100% | 4d → none |  |
| SDR-2-PRO-MAL-E-1150 | CCTV System,Servers & WorkStations Approve | 2026-02-28 → 2026-04-22 A (+53d) | 2026-03-02 → 2026-04-29 A (+58d) | 0% → 100% | 4d → none |  |
| SDR-2-PRO-MAL-E-1160 | Professional 55" Video wall at control room Approve | 2026-02-28 → 2026-04-22 A (+53d) | 2026-03-02 → 2026-04-29 A (+58d) | 0% → 100% | 23d → none |  |
| SDR-2-PRO-MAL-E-1170 | CCTV Switches Approve | 2026-02-28 → 2026-04-22 A (+53d) | 2026-03-02 → 2026-04-29 A (+58d) | 0% → 100% | 23d → none |  |
| SDR-2-PRO-MAL-E-1180 | CCTV Wireless P2P bridges Approve | 2026-02-28 → 2026-04-22 A (+53d) | 2026-03-02 → 2026-04-29 A (+58d) | 0% → 100% | 4d → none |  |
| SDR-2-PRO-MAL-E-1190 | CCTV UPS Approve | 2026-02-28 → 2026-04-22 A (+53d) | 2026-03-02 → 2026-04-29 A (+58d) | 0% → 100% | 4d → none |  |
| SDR-2-PRO-MAL-E-1200 | CCTV Solar System Approve | 2026-03-03 → 2026-04-22 A (+50d) | 2026-03-05 → 2026-04-29 A (+55d) | 0% → 100% | 20d → none |  |
| SDR-2-PRO-MAL-E-1110 | CCTV Poles including all hardwares Approve | 2026-02-28 → 2026-04-26 A (+57d) | 2026-03-02 → 2026-04-29 A (+58d) | 0% → 100% | 4d → none |  |
| SDR-2-PRO-MAL-E-1120 | CCTV Cables "Power" Approve | 2026-02-28 → 2026-04-26 A (+57d) | 2026-03-02 → 2026-04-29 A (+58d) | 0% → 100% | 4d → none |  |
| PR | **Procurement** | 2026-03-03 → 2026-02-17 (-14d) | 2026-11-21 → 2027-01-17 (+57d) |  |  |  |
| 3 | **Purchase Order** | 2026-03-03 → 2026-02-17 (-14d) | 2026-09-07 → 2026-09-28 (+21d) |  |  |  |
| 1 | **Civil** | 2026-03-03 → 2026-02-18 (-13d) | 2026-06-13 → 2026-09-28 (+107d) |  |  |  |
| SDR-2-PRO-PO-C-1000 | Earth works material PO | 2026-03-05 → 2026-02-18 A (-15d) | 2026-03-19 → 2026-05-25 A (+67d) | 0% → 100% | 6d → none |  |
| SDR-2-PRO-PO-C-1010 | Ready mix concrete PO | 2026-03-03 → 2026-02-18 A (-13d) | 2026-03-29 → 2026-06-07 A (+70d) | 0% → 100% | 54d → none |  |
| SDR-2-PRO-PO-C-1020 | Asphalt Mix PO | 2026-03-07 → 2026-02-18 A (-17d) | 2026-03-30 → 2026-09-28 (+182d) |  | 20d → 69d | SDR-2-PRO-MAS-C-1020, SDR-2-MILS-1040, SDR-2-MILS-1090 → SDR-2-PRO-MAS-C-1020, SDR-2-MILS-1040, SDR-2-MILS-1090 FF |
| SDR-2-PRO-PO-C-1070 | Construction material PO | 2026-03-03 → 2026-02-18 A (-13d) | 2026-03-16 → 2026-04-07 A (+22d) | 0% → 100% | 24d → none |  |
| SDR-2-PRO-PO-C-1030 | Kerbstone PO | 2026-03-29 → 2026-03-08 A (-21d) | 2026-04-11 → 2026-09-28 (+170d) |  | 7d → 38.9d |  |
| SDR-2-PRO-PO-C-1050 | Interlock Tiles PO | 2026-04-19 → 2026-04-12 A (-7d) | 2026-04-30 → 2026-09-28 (+151d) |  | 169d → 91d |  |
| SDR-2-PRO-PO-C-1100 | Protection (Guard rail) for Fire hydrant PO | 2026-05-11 → 2026-04-26 A (-15d) | 2026-05-25 → 2026-09-28 (+126d) |  | 38d → 0d |  |
| SDR-2-PRO-PO-C-1060 | Traffic Signage PO | 2026-04-28 → 2026-04-30 A (+2d) | 2026-05-12 → 2026-09-28 (+139d) |  | 32d → 12d | SDR-2-PRO-MAS-C-1060, SDR-2-MILS-1000 FS+92d → SDR-2-MILS-1000 FS+92d, SDR-2-PRO-MAS-C-1060 FF |
| SDR-2-PRO-PO-C-1040 | Road Marking PO | 2026-04-06 → 2026-05-06 A (+30d) | 2026-04-21 → 2026-09-28 (+160d) |  | 23d → 2d | SDR-2-PRO-MAS-C-1030, SDR-2-MILS-1000 FS+73d → SDR-2-MILS-1000 FS+73d, SDR-2-PRO-MAS-C-1030 FF |
| SDR-2-PRO-PO-C-1080 | Fence for Electrical works PO | 2026-04-28 → 2026-08-05 A (+99d) | 2026-05-12 → 2026-09-28 (+139d) |  | 30d → 28d |  |
| SDR-2-PRO-PO-C-1090 | Protection Bollards for CCTV Pole PO | 2026-05-25 → 2026-08-10 A (+77d) | 2026-06-13 → 2026-09-28 (+107d) |  | 33d → 100d |  |
| 2 | **Mechanical** | 2026-03-10 → 2026-02-23 (-15d) | 2026-06-04 → 2026-06-15 (+11d) |  |  |  |
| SDR-2-PRO-PO-M-1000 | GRP Pipes & UPVC Pipes &Fittings PO | 2026-03-10 → 2026-02-23 A (-15d) | 2026-04-01 A | 0% → 100% | 12d → none |  |
| SDR-2-PRO-PO-M-1020 | Valves PO | 2026-04-13 → 2026-03-07 A (-37d) | 2026-04-27 → 2026-06-15 A (+49d) | 0% → 100% | 6d → none |  |
| SDR-2-PRO-PO-M-1010 | HDPE Pipes & Fittings PO | 2026-04-08 → 2026-03-07 A (-32d) | 2026-04-22 → 2026-03-12 A (-41d) | 0% → 100% | 5d → none |  |
| SDR-2-PRO-PO-M-1060 | Fire Hydrant PO | 2026-05-16 → 2026-03-08 A (-69d) | 2026-06-04 → 2026-03-09 A (-87d) | 0% → 100% | 10d → none |  |
| SDR-2-PRO-PO-M-1070 | Valve of Fire Hydrant PO | 2026-05-16 → 2026-03-08 A (-69d) | 2026-06-04 → 2026-03-09 A (-87d) | 0% → 100% | 10d → none |  |
| SDR-2-PRO-PO-M-1030 | Manhole PO | 2026-03-31 → 2026-03-12 A (-19d) | 2026-04-14 → 2026-05-04 A (+20d) | 0% → 100% | 12d → none |  |
| SDR-2-PRO-PO-M-1050 | Manhole, Catch basin and Valve box Cover PO | 2026-05-04 → 2026-03-13 A (-52d) | 2026-05-18 → 2026-06-15 A (+28d) | 0% → 100% | 0d → none |  |

| ID | Task | Start | Finish | Complete | Total float | Predecessors |
| --- | --- | --- | --- | --- | --- | --- |
| SDR-2-PRO-PO-M-1040 | Catch Basin PO | 2026-04-22 → 2026-03-14 A (-39d) | 2026-05-06 → 2026-06-08 A (+33d) | 0% → 100% | 3d → none |  |
| 3 | **Electrical** | 2026-03-03 → 2026-02-17 (-14d) | 2026-09-07 → 2026-09-28 (+21d) |  |  |  |
| SDR-2-PRO-PO-E-1060 | UPVC Ducts & HDPE Ducts for Telecom network PO | 2026-03-03 → 2026-02-17 A (-14d) | 2026-03-28 → 2026-06-01 A (+65d) | 0% → 100% | 10d → none |  |
| SDR-2-PRO-PO-E-1010 | Termination Kits & Joints PO | 2026-03-12 → 2026-02-25 A (-15d) | 2026-04-05 → 2026-09-10 A (+158d) | 0% → 100% | 12d → none |  |
| SDR-2-PRO-PO-E-1000 | MV Cables PO | 2026-03-12 → 2026-02-25 A (-15d) | 2026-04-05 → 2026-03-16 A (-20d) | 0% → 100% | 9d → none |  |
| SDR-2-PRO-PO-E-1020 | LV Cables PO | 2026-04-02 → 2026-03-16 A (-17d) | 2026-04-14 → 2026-06-01 A (+48d) | 0% → 100% | 14d → none |  |
| SDR-2-PRO-PO-E-1080 | Grounding System PO | 2026-04-08 → 2026-03-29 A (-10d) | 2026-04-22 → 2026-06-01 A (+40d) | 0% → 100% | 8d → none |  |
| SDR-2-PRO-PO-E-1100 | Unit Substation PO | 2026-04-22 → 2026-04-15 A (-7d) | 2026-05-06 → 2026-09-28 (+145d) |  | 4d → 17d |  |
| SDR-2-PRO-PO-E-1090 | Switchgears - (RMUs) PO | 2026-04-20 → 2026-04-22 A (+2d) | 2026-05-04 → 2026-04-26 A (-8d) | 0% → 100% | 0d → none |  |
| SDR-2-PRO-PO-E-1070 | Concrete Manholes & DrawPits for Telecom Network PO | 2026-03-25 → 2026-04-26 A (+32d) | 2026-04-08 → 2026-08-04 A (+118d) | 0% → 100% | 10d → none |  |
| SDR-2-PRO-PO-E-1150 | CCTV Poles including all hardwares PO | 2026-05-18 → 2026-04-26 A (-22d) | 2026-06-07 → 2026-09-28 (+113d) |  | 20d → 57d |  |
| SDR-2-PRO-PO-E-1160 | CCTV Cables "Power" PO | 2026-05-25 → 2026-04-26 A (-29d) | 2026-06-13 → 2026-09-28 (+107d) |  | 15d → 57d |  |
| SDR-2-PRO-PO-E-1170 | CCTV Cables "CAT6" PO | 2026-05-25 → 2026-04-26 A (-29d) | 2026-06-13 → 2026-09-28 (+107d) |  | 3d → 18.9d |  |
| SDR-2-PRO-PO-E-1190 | CCTV System,Servers & WorkStations PO | 2026-06-24 → 2026-04-26 A (-59d) | 2026-07-08 → 2026-09-28 (+82d) |  | 20d → 63d |  |
| SDR-2-PRO-PO-E-1200 | Professional 55" Video wall at control room PO | 2026-07-08 → 2026-04-26 A (-73d) | 2026-07-22 → 2026-09-28 (+68d) |  | 18.2d → 52d |  |
| SDR-2-PRO-PO-E-1210 | CCTV Switches PO | 2026-07-22 → 2026-04-26 A (-87d) | 2026-08-05 → 2026-09-28 (+54d) |  | 17d → 63d |  |
| SDR-2-PRO-PO-E-1220 | CCTV Wireless P2P bridges PO | 2026-08-01 → 2026-04-26 A (-97d) | 2026-08-15 → 2026-09-28 (+44d) |  | 9d → 63d |  |
| SDR-2-PRO-PO-E-1230 | CCTV UPS PO | 2026-08-09 → 2026-04-26 A (-105d) | 2026-08-23 → 2026-09-28 (+36d) |  | 10d → 51d |  |
| SDR-2-PRO-PO-E-1240 | CCTV Solar System PO | 2026-08-24 → 2026-04-26 A (-120d) | 2026-09-07 → 2026-09-28 (+21d) |  | 14d → 74d |  |
| SDR-2-PRO-PO-E-1110 | Lighting Panels PO | 2026-05-06 → 2026-04-29 A (-7d) | 2026-05-20 → 2026-08-05 A (+77d) | 0% → 100% | 19d → none |  |
| SDR-2-PRO-PO-E-1030 | Street Lighting Poles PO | 2026-04-14 → 2026-04-30 A (+16d) | 2026-04-28 → 2026-06-02 A (+35d) | 0% → 100% | 5d → none |  |
| SDR-2-PRO-PO-E-1040 | Street Lighting Fixtures PO | 2026-04-28 → 2026-04-30 A (+2d) | 2026-05-12 → 2026-08-01 A (+81d) | 0% → 100% | 7d → none |  |
| SDR-2-PRO-PO-E-1050 | DrawPits for Lighting PO | 2026-05-12 → 2026-04-30 A (-12d) | 2026-06-02 → 2026-09-07 A (+97d) | 0% → 100% | 0d → none |  |
| SDR-2-PRO-PO-E-1120 | KWH Meter with mounting frame PO | 2026-05-06 → 2026-05-02 A (-4d) | 2026-05-20 → 2026-09-28 (+131d) |  | 5d → 7d |  |
| SDR-2-PRO-PO-E-1140 | PECD Ducts for CCTV network PO | 2026-05-20 → 2026-05-06 A (-14d) | 2026-06-09 → 2026-09-28 (+111d) |  | 15d → 5.9d |  |
| SDR-2-PRO-PO-E-1180 | Racks and Patch panels PO | 2026-06-10 → 2026-06-15 A (+5d) | 2026-06-24 → 2026-09-28 (+96d) |  | 18d → 57d |  |
| SDR-2-PRO-PO-E-1130 | Main Feeder Pillar PO | 2026-05-06 → 2026-08-16 A (+102d) | 2026-05-20 → 2026-09-28 (+131d) |  | 13d → 2d |  |
| 1 | **Delivery to Site** | 2026-04-10 → 2026-03-14 (-27d) | 2026-11-11 → 2027-01-13 (+63d) |  |  |  |
| 2 | **Short Lead Items Delivery** | 2026-04-10 → 2026-04-19 (+9d) | 2026-10-04 → 2027-01-13 (+101d) |  |  |  |
| 1 | **Civil** | 2026-04-10 → 2026-04-19 (+9d) | 2026-10-04 → 2027-01-13 (+101d) |  |  |  |
| SDR-2-PRO-DES-C-1070 | Construction material Delivery | 2026-04-14 → 2026-04-19 A (+5d) | 2026-08-05 → 2026-07-20 A (-16d) | 0% → 100% | 28d → none |  |
| SDR-2-PRO-DES-C-1000 | Earth works material Delivery | 2026-04-10 → 2026-05-31 A (+51d) | 2026-06-02 → 2026-07-20 A (+48d) | 0% → 100% | 7d → none |  |
| SDR-2-PRO-DES-C-1010 | Ready mix concrete Delivery | 2026-05-04 → 2026-06-15 A (+42d) | 2026-09-02 → 2026-06-22 A (-72d) | 0% → 100% | 64d → none |  |
| SDR-2-PRO-DES-C-1020 | Asphalt Mix Delivery | 2026-06-28 → 2026-09-01 A (+65d) | 2026-10-04 → 2026-12-15 (+72d) |  | 23d → 3.1d | SDR-2-PRO-PO-C-1020 FS+72d → SDR-2-PRO-PO-C-1020 FF |
| SDR-2-PRO-DES-C-1030 | Kerbstone Delivery | 2026-05-05 → 2026-09-01 A (+119d) | 2026-07-07 → 2026-11-07 (+123d) |  | 8d → 5d | SDR-2-PRO-PO-C-1030 FS+20d → SDR-2-PRO-PO-C-1030 FF |
| SDR-2-PRO-DES-C-1050 | Interlock Tiles Delivery | 2026-05-11 → 2026-09-01 A (+113d) | 2026-06-23 → 2026-10-18 (+117d) |  | 198d → 86.1d | SDR-2-PRO-PO-C-1050 FS+8d → SDR-2-PRO-PO-C-1050 FF |
| SDR-2-PRO-DES-C-1090 | Protection Bollards for CCTV Pole Delivery | 2026-06-14 → 2026-09-29 (+107d) | 2026-06-30 → 2026-10-15 (+107d) |  | 38d → 117d |  |
| SDR-2-PRO-DES-C-1100 | Protection (Guard rail) for Fire hydrant Delivery | 2026-06-14 → 2026-10-13 (+121d) | 2026-08-12 → 2026-12-11 (+121d) |  | 44d → 0d |  |
| SDR-2-PRO-DES-C-1040 | Road Marking Delivery | 2026-06-08 → 2026-10-16 (+130d) | 2026-09-05 → 2027-01-13 (+130d) |  | 27d → 3d | SDR-2-PRO-PO-C-1040 FS+36d → SDR-2-PRO-PO-C-1040 FS+15d |
| SDR-2-PRO-DES-C-1080 | Fence for Electrical works Delivery | 2026-06-05 → 2026-10-18 (+135d) | 2026-07-03 → 2026-11-15 (+135d) |  | 35d → 32d |  |
| SDR-2-PRO-DES-C-1060 | Traffic Signage Manufacture and Delivery | 2026-06-11 → 2026-10-23 (+134d) | 2026-06-30 → 2026-11-11 (+134d) |  | 38d → 14d |  |
| 3 | **Electrical** |  | 2026-07-28 → 2026-09-30 (+64d) |  |  |  |
| SDR-2-PRO-DES-E-1000 | UPVC Ducts & HDPE Ducts for Telecom network M Delivery | 2026-04-20 A | 2026-05-24 → 2026-07-01 A (+38d) | 0% → 100% | 11d → none |  |
| SDR-2-PRO-DES-E-1010 | Grounding System Delivery | 2026-05-07 → 2026-06-02 A (+26d) | 2026-06-16 → 2026-07-01 A (+15d) | 0% → 100% | 10d → none |  |
| SDR-2-PRO-DES-E-1020 | PECD Ducts for CCTV network Delivery | 2026-06-22 → 2026-08-17 A (+56d) | 2026-07-28 → 2026-09-30 (+64d) |  | 17d → 5d | SDR-2-PRO-PO-E-1140 FS+10d → SDR-2-PRO-PO-E-1140 FF |
| 5 | **Long Lead Items Delivery** | 2026-05-01 → 2026-03-14 (-48d) | 2026-11-11 → 2026-12-06 (+25d) |  |  |  |
| 3 | **Electrical** | 2026-05-04 → 2026-03-14 (-51d) | 2026-11-11 → 2026-12-06 (+25d) |  |  |  |
| SDR-2-PRO-DEL-E-1000 | MV Cables Delivery | 2026-05-04 → 2026-03-14 A (-51d) | 2026-07-16 → 2026-09-10 A (+56d) | 0% → 100% | 10d → none |  |
| SDR-2-PRO-DEL-E-1060 | Switchgears - (RMUs) Delivery | 2026-05-14 → 2026-05-10 A (-4d) | 2026-07-06 → 2026-05-18 A (-49d) | 0% → 100% | 0d → none |  |
| SDR-2-PRO-DEL-E-1010 | LV Cables Delivery | 2026-05-11 → 2026-06-27 A (+47d) | 2026-07-23 → 2026-09-17 A (+56d) | 0% → 100% | 17d → none |  |
| SDR-2-PRO-DEL-E-1050 | Concrete Manholes & DrawPits for Telecom Network Delivery | 2026-05-12 → 2026-07-21 A (+70d) | 2026-07-19 → 2026-08-24 A (+36d) | 0% → 100% | 12d → none |  |
| SDR-2-PRO-DEL-E-1210 | Termination Kits & Joints Delivery | 2026-05-11 → 2026-08-24 A (+105d) | 2026-07-13 → 2026-09-14 A (+63d) | 0% → 100% | 14d → none |  |
| SDR-2-PRO-DEL-E-1110 | CCTV Poles including all hardwares Delivery | 2026-06-17 → 2026-08-24 A (+68d) | 2026-08-20 → 2026-11-04 (+76d) |  | 24d → 29.1d | SDR-2-PRO-PO-E-1150 FS+8d → SDR-2-PRO-PO-E-1150 FF |
| SDR-2-PRO-DEL-E-1120 | CCTV Cables "Power" Delivery | 2026-06-23 → 2026-08-24 A (+62d) | 2026-08-26 → 2026-11-04 (+70d) |  | 18d → 29.1d | SDR-2-PRO-PO-E-1160 FS+8d → SDR-2-PRO-PO-E-1160 FF |
| SDR-2-PRO-DEL-E-1130 | CCTV Cables "CAT6" Delivery | 2026-06-14 → 2026-08-24 A (+71d) | 2026-07-28 → 2026-10-15 (+79d) |  | 3d → 5d | SDR-2-PRO-PO-E-1170 → SDR-2-PRO-PO-E-1170 FF |
| SDR-2-PRO-DEL-E-1140 | Racks and Patch panels Delivery | 2026-07-05 → 2026-08-24 A (+50d) | 2026-08-23 → 2026-10-20 (+58d) |  | 21d → 44.1d | SDR-2-PRO-PO-E-1180 FS+8d → SDR-2-PRO-PO-E-1180 FF |
| SDR-2-PRO-DEL-E-1150 | CCTV System,Servers & WorkStations Delivery | 2026-07-19 → 2026-08-24 A (+36d) | 2026-09-06 → 2026-10-20 (+44d) |  | 23d → 52.1d | SDR-2-PRO-PO-E-1190 FS+8d → SDR-2-PRO-PO-E-1190 FF |
| SDR-2-PRO-DEL-E-1160 | Professional 55" Video wall at control room Delivery | 2026-08-02 → 2026-08-24 A (+22d) | 2026-09-20 → 2026-10-20 (+30d) |  | 21.2d → 39.1d | SDR-2-PRO-PO-E-1200 FS+8d → SDR-2-PRO-PO-E-1200 FF |
| SDR-2-PRO-DEL-E-1170 | CCTV Switches Delivery | 2026-08-16 → 2026-08-24 A (+8d) | 2026-10-05 → 2026-10-20 (+15d) |  | 19d → 52.1d | SDR-2-PRO-PO-E-1210 FS+8d → SDR-2-PRO-PO-E-1210 FF |
| SDR-2-PRO-DEL-E-1180 | CCTV Wireless P2P bridges Delivery | 2026-08-25 → 2026-08-24 A (-1d) | 2026-10-14 → 2026-10-20 (+6d) |  | 10d → 52.1d | SDR-2-PRO-PO-E-1220 FS+8d → SDR-2-PRO-PO-E-1220 FF |
| SDR-2-PRO-DEL-E-1190 | CCTV UPS Delivery | 2026-08-24 A | 2026-10-13 → 2026-10-20 (+7d) |  | 11d → 38.1d | SDR-2-PRO-PO-E-1230 → SDR-2-PRO-PO-E-1230 FF |
| SDR-2-PRO-DEL-E-1200 | CCTV Solar System Delivery | 2026-09-17 → 2026-08-24 A (-24d) | 2026-11-11 → 2026-10-25 (-17d) |  | 17d → 59.1d | SDR-2-PRO-PO-E-1240 FS+8d → SDR-2-PRO-PO-E-1240 FF |
| SDR-2-PRO-DEL-E-1040 | DrawPits for Lighting Delivery | 2026-06-17 → 2026-09-07 A (+82d) | 2026-07-26 → 2026-09-14 A (+50d) | 0% → 100% | 0d → none |  |
| SDR-2-PRO-DEL-E-1020 | Street Lighting Poles Delivery | 2026-05-25 → 2026-09-28 (+126d) | 2026-08-06 → 2026-12-06 (+122d) |  | 6d → 16d |  |
| SDR-2-PRO-DEL-E-1030 | Street Lighting Fixtures Delivery | 2026-05-24 → 2026-09-28 (+127d) | 2026-08-05 → 2026-12-06 (+123d) |  | 9d → 16d |  |
| SDR-2-PRO-DEL-E-1080 | Lighting Panels Delivery | 2026-06-18 → 2026-09-28 (+102d) | 2026-08-21 → 2026-12-01 (+102d) |  | 23d → 2d |  |
| SDR-2-PRO-DEL-E-1070 | Unit Substation Delivery | 2026-05-14 → 2026-09-29 (+138d) | 2026-07-21 → 2026-12-02 (+134d) |  | 5d → 20d | SDR-2-PRO-PO-E-1100 FS+6d → SDR-2-PRO-PO-E-1100 |
| SDR-2-PRO-DEL-E-1090 | KWH Meter with mounting frame Delivery | 2026-05-21 → 2026-09-29 (+131d) | 2026-07-13 → 2026-11-17 (+127d) |  | 6d → 8d |  |
| SDR-2-PRO-DEL-E-1100 | Main Feeder Pillar Manufacture and Delivery | 2026-06-09 → 2026-10-13 (+126d) | 2026-07-28 → 2026-12-01 (+126d) |  | 15d → 2d |  |
| 2 | **Mechanical** | 2026-05-01 → 2026-03-16 (-46d) | 2026-09-01 → 2026-09-28 (+27d) |  |  |  |

| ID | Task | Start | Finish | Duration | Complete | Total float | Predecessors |
| --- | --- | --- | --- | --- | --- | --- | --- |
| SDR-2-PRO-DEL-M-1000 | GRP Pipes & UPVC Pipes &Fittings Delivery | 2026-05-01 → 2026-03-16 A (-46d) | 2026-06-21 → 2026-07-13 A (+22d) |  | 0% → 100% | 14d → none |  |
| SDR-2-PRO-DEL-M-1010 | HDPE Pipes & Fittings Delivery | 2026-05-18 → 2026-03-16 A (-63d) | 2026-06-30 → 2026-07-13 A (+13d) |  | 0% → 100% | 6d → none |  |
| SDR-2-PRO-DEL-M-1030 | Manhole Delivery | 2026-05-17 → 2026-05-12 A (-5d) | 2026-07-07 → 2026-09-28 (+83d) |  |  | 14d → 49d |  |
| SDR-2-PRO-DEL-M-1050 | Manhole, Catch basin and Valve box Cover Delivery | 2026-06-02 → 2026-05-12 A (-21d) | 2026-07-11 → 2026-09-28 (+79d) |  |  | 0d → 49d |  |
| SDR-2-PRO-DEL-M-1060 | Fire Hydrant Delivery | 2026-06-08 → 2026-06-03 A (-5d) | 2026-08-21 → 2026-09-28 (+38d) |  |  | 11d → 66d |  |
| SDR-2-PRO-DEL-M-1070 | Valve of Fire Hydrant Delivery | 2026-06-08 → 2026-06-03 A (-5d) | 2026-08-21 → 2026-09-28 (+38d) |  |  | 11d → 66d |  |
| SDR-2-PRO-DEL-M-1020 | Valves Delivery | 2026-05-21 → 2026-06-03 A (+13d) | 2026-09-01 → 2026-09-28 (+27d) |  |  | 8d → 58d |  |
| SDR-2-PRO-DEL-M-1040 | Catch Basin Delivery | 2026-05-19 → 2026-06-17 A (+29d) | 2026-07-11 → 2026-09-28 (+79d) |  |  | 4d → 5d |  |
| 4 | **Materials Staging Time** | 2026-04-10 → 2026-03-17 (-24d) | 2026-11-21 → 2027-01-17 (+57d) |  |  |  |  |
| 1 | **Civil** | 2026-04-10 → 2026-04-21 (+11d) | 2026-09-09 → 2027-01-17 (+130d) |  |  |  |  |
| SDR-2-PRO-ST-C-1070 | Construction material staging | 2026-05-24 → 2026-04-21 A (-33d) | 2026-05-31 → 2026-07-21 A (+51d) |  | 0% → 100% | 119d → none |  |
| SDR-2-PRO-ST-C-1000 | Earth works material staging | 2026-04-10 → 2026-06-01 A (+52d) | 2026-04-13 → 2026-07-21 A (+99d) |  | 0% → 100% | 22d → none |  |
| SDR-2-PRO-ST-C-1010 | Ready mix concrete staging | 2026-04-10 → 2026-07-01 A (+82d) | 2026-04-13 → 2026-07-04 A (+82d) |  | 0% → 100% | 245d → none |  |
| SDR-2-PRO-ST-C-1030 | Kerbstone staging | 2026-07-08 → 2026-09-16 A (+70d) | 2026-07-11 → 2026-11-07 (+119d) |  |  | 100d → 49.1d | SDR-2-PRO-DES-C-1030 → SDR-2-PRO-DES-C-1030 FF |
| SDR-2-PRO-ST-C-1050 | Interlock Tiles staging | 2026-06-24 → 2026-10-18 (+116d) | 2026-06-27 → 2026-10-22 (+117d) |  |  | 198d → 86.1d |  |
| SDR-2-PRO-ST-C-1090 | Protection Bollards for CCTV Pole staging | 2026-07-05 → 2026-10-20 (+107d) | 2026-07-08 → 2026-10-23 (+107d) |  |  | 130d → 117d |  |
| SDR-2-PRO-ST-C-1060 | Traffic Signage staging | 2026-07-01 → 2026-11-12 (+134d) | 2026-07-04 → 2026-11-15 (+134d) |  |  | 248d → 119d |  |
| SDR-2-PRO-ST-C-1080 | Fence for Electrical works staging | 2026-07-04 → 2026-11-16 (+135d) | 2026-07-07 → 2026-11-19 (+135d) |  |  | 94d → 32d |  |
| SDR-2-PRO-ST-C-1100 | Protection (Guard rail) for Fire hydrant staging | 2026-08-13 → 2026-12-12 (+121d) | 2026-08-16 → 2026-12-15 (+121d) |  |  | 65d → 0d |  |
| SDR-2-PRO-ST-C-1020 | Asphalt Mix staging | 2026-06-28 → 2026-12-15 (+170d) | 2026-07-01 → 2026-12-15 (+167d) | 4d → 0d |  | 139d → 3.1d | SDR-2-PRO-DES-C-1020 SS → SDR-2-PRO-DES-C-1020 FF |
| SDR-2-PRO-ST-C-1040 | Road Marking staging | 2026-09-06 → 2027-01-14 (+130d) | 2026-09-09 → 2027-01-17 (+130d) |  |  | 149d → 23d |  |
| 2 | **Mechanical** | 2026-06-22 → 2026-03-21 (-93d) | 2026-09-11 → 2026-09-28 (+17d) |  |  |  |  |
| SDR-2-PRO-ST-M-1000 | GRP Pipes & Fittings staging | 2026-06-22 → 2026-03-21 A (-93d) | 2026-07-01 → 2026-07-21 A (+20d) |  | 0% → 100% | 14d → none |  |
| SDR-2-PRO-ST-M-1010 | HDPE Pipes & Fittings staging | 2026-07-01 → 2026-03-21 A (-102d) | 2026-07-10 → 2026-07-21 A (+11d) |  | 0% → 100% | 132d → none |  |
| SDR-2-PRO-ST-M-1050 | Manhole, Catch basin and Valve box Cover staging | 2026-07-12 → 2026-05-13 A (-60d) | 2026-07-21 → 2026-09-28 (+69d) |  |  | 0d → 58d | SDR-2-PRO-DEL-M-1050 → SDR-2-PRO-DEL-M-1050 FF |
| SDR-2-PRO-ST-M-1030 | Manhole staging | 2026-07-08 → 2026-05-13 A (-56d) | 2026-07-17 → 2026-09-28 (+73d) |  |  | 164d → 214d | SDR-2-PRO-DEL-M-1030 → SDR-2-PRO-DEL-M-1030 FF |
| SDR-2-PRO-ST-M-1020 | Valves staging | 2026-09-02 → 2026-06-15 A (-79d) | 2026-09-11 → 2026-09-28 (+17d) |  |  | 80d → 89d | SDR-2-PRO-DEL-M-1020 → SDR-2-PRO-DEL-M-1020 FF |
| SDR-2-PRO-ST-M-1060 | Fire Hydrant staging | 2026-08-22 → 2026-06-18 A (-65d) | 2026-08-31 → 2026-09-28 (+28d) |  |  | 91d → 134d | SDR-2-PRO-DEL-M-1060 → SDR-2-PRO-DEL-M-1060 FF |
| SDR-2-PRO-ST-M-1070 | Valve of Fire Hydrant staging | 2026-08-22 → 2026-06-18 A (-65d) | 2026-08-31 → 2026-09-28 (+28d) |  |  | 91d → 134d | SDR-2-PRO-DEL-M-1070 → SDR-2-PRO-DEL-M-1070 FF |
| SDR-2-PRO-ST-M-1040 | Catch Basin staging | 2026-07-12 → 2026-06-18 A (-24d) | 2026-07-21 → 2026-09-28 (+69d) |  |  | 136d → 129d | SDR-2-PRO-DEL-M-1040 → SDR-2-PRO-DEL-M-1040 FF |
| 3 | **Electrical** | 2026-05-25 → 2026-03-17 (-69d) | 2026-11-21 → 2026-11-27 (+6d) |  |  |  |  |
| SDR-2-PRO-ST-E-1000 | MV Cables staging | 2026-07-17 → 2026-03-17 A (-122d) | 2026-07-26 → 2026-09-28 (+64d) |  |  | 103d → 39d |  |
| SDR-2-PRO-ST-E-1090 | Switchgears - (RMUs) staging | 2026-07-07 → 2026-05-17 A (-51d) | 2026-07-16 → 2026-06-01 A (-45d) |  | 0% → 100% | 85d → none |  |
| SDR-2-PRO-ST-E-1060 | UPVC Ducts & HDPE Ducts for Telecom network staging | 2026-05-25 → 2026-06-01 A (+7d) | 2026-06-07 → 2026-07-21 A (+44d) |  | 0% → 100% | 165d → none |  |
| SDR-2-PRO-ST-E-1080 | Grounding System staging | 2026-06-17 → 2026-06-03 A (-14d) | 2026-06-26 → 2026-07-21 A (+25d) |  | 0% → 100% | 10d → none |  |
| SDR-2-PRO-ST-E-1020 | LV Cables staging | 2026-07-27 → 2026-07-20 A (-7d) | 2026-08-05 → 2026-09-28 (+54d) |  |  | 17d → 52d |  |
| SDR-2-PRO-ST-E-1070 | Concrete Manholes & DrawPits for Telecom Network staging | 2026-07-20 → 2026-07-27 A (+7d) | 2026-07-29 → 2026-09-28 (+61d) |  |  | 90d → 58d |  |
| SDR-2-PRO-ST-E-1050 | DrawPits for Lighting staging | 2026-07-27 → 2026-08-20 A (+24d) | 2026-08-05 → 2026-09-07 A (+33d) |  | 0% → 100% | 17d → none |  |
| SDR-2-PRO-ST-E-1010 | Termination Kits & Joints staging | 2026-07-14 → 2026-09-28 (+76d) | 2026-07-23 → 2026-10-07 (+76d) |  |  | 14d → 30d |  |
| SDR-2-PRO-ST-E-1030 | Street Lighting Poles staging | 2026-08-07 → 2026-09-28 (+52d) | 2026-08-16 → 2026-10-07 (+52d) |  |  | 12d → 43d | SDR-2-PRO-DEL-E-1020 → SDR-2-PRO-DEL-E-1020 SS |
| SDR-2-PRO-ST-E-1040 | Street Lighting Fixtures staging | 2026-08-06 → 2026-09-28 (+53d) | 2026-08-15 → 2026-10-07 (+53d) |  |  | 13d → 43d | SDR-2-PRO-DEL-E-1030 → SDR-2-PRO-DEL-E-1030 SS |
| SDR-2-PRO-ST-E-1110 | Lighting Panels staging | 2026-06-18 → 2026-09-28 (+102d) | 2026-06-27 → 2026-10-07 (+102d) |  |  | 87d → 59d |  |
| SDR-2-PRO-ST-E-1100 | Unit Substation staging | 2026-07-22 → 2026-09-29 (+69d) | 2026-07-31 → 2026-10-08 (+69d) |  |  | 65d → 67d | SDR-2-PRO-DEL-E-1070 → SDR-2-PRO-DEL-E-1070 SS |
| SDR-2-PRO-ST-E-1140 | PECD Ducts for CCTV network staging | 2026-07-29 → 2026-09-30 (+63d) | 2026-08-07 → 2026-10-10 (+64d) |  |  | 25d → 54.1d |  |
| SDR-2-PRO-ST-E-1130 | Main Feeder Pillar staging | 2026-06-11 → 2026-10-15 (+126d) | 2026-06-20 → 2026-10-24 (+126d) |  |  | 94d → 49d |  |
| SDR-2-PRO-ST-E-1170 | CCTV Cables "CAT6" staging | 2026-07-29 → 2026-10-15 (+78d) | 2026-08-07 → 2026-10-25 (+79d) |  |  | 25d → 39.1d |  |
| SDR-2-PRO-ST-E-1180 | Racks and Patch panels staging | 2026-08-24 → 2026-10-20 (+57d) | 2026-09-02 → 2026-10-30 (+58d) |  |  | 61d → 52.1d |  |
| SDR-2-PRO-ST-E-1190 | CCTV System,Servers & WorkStations staging | 2026-09-07 → 2026-10-20 (+43d) | 2026-09-16 → 2026-10-30 (+44d) |  |  | 23d → 52.1d |  |
| SDR-2-PRO-ST-E-1200 | Professional 55" Video wall at control room staging | 2026-09-21 → 2026-10-20 (+29d) | 2026-10-01 → 2026-10-30 (+29d) |  |  | 55d → 43.1d |  |
| SDR-2-PRO-ST-E-1210 | CCTV Switches staging | 2026-10-06 → 2026-10-20 (+14d) | 2026-10-15 → 2026-10-30 (+15d) |  |  | 19d → 52.1d |  |
| SDR-2-PRO-ST-E-1220 | CCTV Wireless P2P bridges staging | 2026-10-15 → 2026-10-20 (+5d) | 2026-10-24 → 2026-10-30 (+6d) |  |  | 10d → 52.1d |  |
| SDR-2-PRO-ST-E-1230 | CCTV UPS staging | 2026-10-14 → 2026-10-20 (+6d) | 2026-10-23 → 2026-10-30 (+7d) |  |  | 11d → 52.1d |  |
| SDR-2-PRO-ST-E-1240 | CCTV Solar System staging | 2026-11-12 → 2026-10-25 (-18d) | 2026-11-21 → 2026-11-04 (-17d) |  |  | 21d → 65.1d |  |
| SDR-2-PRO-ST-E-1150 | CCTV Poles including all hardwares staging | 2026-08-21 → 2026-11-04 (+75d) | 2026-08-30 → 2026-11-14 (+76d) |  |  | 40d → 37.1d |  |
| SDR-2-PRO-ST-E-1160 | CCTV Cables "Power" staging | 2026-08-27 → 2026-11-04 (+69d) | 2026-09-05 → 2026-11-14 (+70d) |  |  | 34d → 37.1d |  |
| SDR-2-PRO-ST-E-1120 | KWH Meter with mounting frame staging | 2026-07-14 → 2026-11-18 (+127d) | 2026-07-23 → 2026-11-27 (+127d) |  |  | 63d → 16d |  |
| CON | **Construction** | 2026-02-07 → 2026-02-06 (-1d) | 2027-07-05 → 2027-07-04 (-1d) |  |  |  |  |
| RO | **ROAD WORKS** | 2026-02-07 → 2026-02-06 (-1d) | 2027-04-17 → 2027-04-13 (-4d) |  |  |  |  |
| ZA | **ZONE A** | 2026-02-07 → 2026-02-06 (-1d) | 2027-04-17 → 2027-04-12 (-5d) |  |  |  |  |
| 14 | **GENERAL WORKS** | 2026-02-07 → 2026-02-06 (-1d) | 2026-03-29 → 2026-03-16 (-13d) |  |  |  |  |
| 10 | **Cleaning and removal of organic materials in Zone A** | 2026-02-07 → 2026-02-06 (-1d) | 2026-02-24 → 2026-03-06 (+10d) |  |  |  |  |
| SDR-2-CON-RW-ZA-1000 | Cleaning and removal of organic materials in Zone A | 2026-02-07 → 2026-02-06 A (-1d) | 2026-02-24 → 2026-03-06 A (+10d) |  | 0% → 100% | 9d → none |  |
| 12 | **Surveying works Zone A** | 2026-03-07 → 2026-03-06 (-1d) | 2026-03-29 → 2026-03-16 (-13d) |  |  |  |  |
| SDR-2-CON-RW-ZA-1010 | Surveying works Zone A | 2026-03-07 → 2026-03-06 A (-1d) | 2026-03-29 → 2026-03-16 A (-13d) |  | 0% → 100% | 1d → none | SDR-2-CON-RW-ZA-1000, SDR-2-PRO-MAL-E-1150, SDR-2-PRO-MAL-E-1140, SDR-2-PRO-MAL-E-1130, SDR-2-PRO-MAL-E-1120, SDR-2-PRO-MAL-E-1110, SDR-2-PRO-MAL-E-1000, SDR-2-PRO-MAL-E-1010, SDR-2-PRO-MAL-E-1020, SDR-2-PRO-MAL-E-1030, SDR-2-PRO-MAL-E-1040, SDR-2-PRO-MAL-E-1050, SDR-2-PRO-MAL-E-1180, SDR-2-PRO-MAL-E-1060, SDR-2-PRO-MAL-E-1070, SDR-2-PRO-MAL-E-1080, SDR-2-PRO-MAL-E-1090, SDR-2-PRO-MAL-E-1100, SDR-2-PRO-MAL-E-1190, SDR-2-PRO-MAL-M-1000, SDR-2-PRO-MAL-M-1010, SDR-2-PRO-MAL-M-1020, SDR-2-PRO-MAL-M-1030, SDR-2-PRO-MAL-M-1040, SDR-2-PRO-MAL-M-1050, SDR-2-PRO-MAL-M-1060, SDR-2-PRO-MAL-M-1070, SDR-2-PRO-MAS-E-1000, SDR-2-PRO-MAS-E-1010, SDR-2-PRO-MAS-E-1020, SDR-2-PRO-MAS-E-1030, SDR-2-PRO-MAS-C-1000, SDR-2-PRO-MAS-C-1010, SDR-2-PRO-MAS-C-1040, SDR-2-PRO-MAS-C-1020, SDR-2-PRO-MAS-C-1030, SDR-2-PRO-MAS-C-1050, SDR-2-PRO-MAS-C-1060, SDR-2-PRO-MAS-C-1070, SDR-2-PRO-MAS-C-1090, SDR-2-PRO-MAS-C-1100, SDR-2-PRO-MAS-C-1080, SDR-2-ENG-APP-M-1010 SS, SDR-2-PREL-1100 → SDR-2-ENG-APP-M-1010 SS, SDR-2-PREL-1100, SDR-2-CON-RW-ZA-1000, SDR-2-PRO-MAS-C-1030 SS, SDR-2-PRO-MAS-C-1060 SS, SDR-2-PRO-MAL-E-1150, SDR-2-PRO-MAL-E-1140, SDR-2-PRO-MAL-E-1130, SDR-2-PRO-MAL-E-1120, SDR-2-PRO-MAL-E-1110, SDR-2-PRO-MAL-E-1000, SDR-2-PRO-MAL-E-1010, SDR-2-PRO-MAL-E-1020, SDR-2-PRO-MAL-E-1030, SDR-2-PRO-MAL-E-1040, SDR-2-PRO-MAL-E-1050, SDR-2-PRO-MAL-E-1180, SDR-2-PRO-MAL-E-1060, SDR-2-PRO-MAL-E-1070, SDR-2-PRO-MAL-E-1080, SDR-2-PRO-MAL-E-1090, SDR-2-PRO-MAL-E-1100, SDR-2-PRO-MAL-E-1190, SDR-2-PRO-MAL-M-1000, SDR-2-PRO-MAL-M-1010, SDR-2-PRO-MAL-M-1020, SDR-2-PRO-MAL-M-1030, SDR-2-PRO-MAL-M-1040, SDR-2-PRO-MAL-M-1050, SDR-2-PRO-MAL-M-1060, SDR-2-PRO-MAL-M-1070, SDR-2-PRO-MAS-E-1000, SDR-2-PRO-MAS-E-1010, SDR-2-PRO-MAS-E-1020, SDR-2-PRO-MAS-E-1030, SDR-2-PRO-MAS-C-1000, SDR-2-PRO-MAS-C-1010, SDR-2-PRO-MAS-C-1040, SDR-2-PRO-MAS-C-1020, SDR-2-PRO-MAS-C-1050, SDR-2-PRO-MAS-C-1070, SDR-2-PRO-MAS-C-1090, SDR-2-PRO-MAS-C-1100, SDR-2-PRO-MAS-C-1080 |
| 1 | **ROAD WORKS IN ( PH2-COL-MC10 )** | 2026-04-12 → 2026-03-23 (-20d) | 2027-03-27 → 2027-04-10 (+14d) |  |  |  |  |
| 1 | **Earth Works Road** | 2026-04-12 → 2026-03-23 (-20d) | 2026-05-04 → 2026-05-07 (+3d) |  |  |  |  |
| SDR-2-CON-RW-ZA-1020 | Roadway Excavation and cuttings | 2026-04-12 → 2026-03-23 A (-20d) | 2026-05-04 → 2026-05-07 A (+3d) |  | 0% → 100% | 1d → none |  |
| 10 | **Backfilling Works** | 2026-05-11 → 2026-04-07 (-34d) | 2026-08-20 → 2026-06-12 (-69d) |  |  |  |  |
| SDR-2-CON-RW-ZA-2860 | Embankments to the Road 1 Layer | 2026-05-11 → 2026-04-07 A (-34d) | 2026-06-08 → 2026-04-30 A (-39d) |  | 0% → 100% | 11d → none | SDR-2-CON-RW-ZA-1020 FS+5d → SDR-2-CON-RW-ZA-1020 |
| SDR-2-CON-RW-ZA-2870 | Embankments to the Road 2 Layer | 2026-06-09 → 2026-05-16 A (-24d) | 2026-07-02 → 2026-05-23 A (-40d) |  | 0% → 100% | 11d → none |  |

| ID | Task | Start | Finish | Complete | Total float | Predecessors |
| --- | --- | --- | --- | --- | --- | --- |
| SDR-2-CON-RW-ZA-2880 | Embankments to the Road 3 Layer | 2026-07-04 → 2026-05-23 A (-42d) | 2026-07-27 → 2026-06-04 A (-53d) | 0% → 100% | 11d → none |  |
| SDR-2-CON-RW-ZA-1030 | Embankments to the Road 4 Layer | 2026-07-28 → 2026-06-04 A (-54d) | 2026-08-20 → 2026-06-12 A (-69d) | 0% → 100% | 11d → none |  |
| 11 | **Subgrade** | 2026-08-22 → 2026-08-11 (-11d) | 2026-09-14 → 2026-08-31 (-14d) |  |  |  |
| SDR-2-CON-RW-ZA-1060 | Subgrade layer works | 2026-08-22 → 2026-08-11 A (-11d) | 2026-09-14 → 2026-08-31 A (-14d) | 0% → 100% | 11d → none |  |
| 9 | **Earth Works Plot** | 2026-09-15 → 2026-05-16 (-122d) | 2026-12-22 → 2026-07-21 (-154d) |  |  |  |
| SDR-2-CON-RW-ZA-1040 | Plot Excavation for cuttings (all types of soil) | 2026-09-15 → 2026-05-16 A (-122d) | 2026-10-10 → 2026-05-31 A (-132d) | 0% → 100% | 27d → none |  |
| SDR-2-CON-RW-ZA-2890 | Embankments to the Plot Layer 1 | 2026-10-11 → 2026-05-23 A (-141d) | 2026-11-03 → 2026-06-04 A (-152d) | 0% → 100% | 43d → none |  |
| SDR-2-CON-RW-ZA-2900 | Embankments to the Plot Layer 2 | 2026-11-04 → 2026-06-15 A (-142d) | 2026-11-28 → 2026-07-05 A (-146d) | 0% → 100% | 43d → none |  |
| SDR-2-CON-RW-ZA-1050 | Embankments to the Plot Layer 3 | 2026-11-29 → 2026-07-14 A (-138d) | 2026-12-22 → 2026-07-21 A (-154d) | 0% → 100% | 43d → none |  |
| 2 | **Base Course** | 2026-09-15 → 2026-08-31 (-15d) | 2026-10-10 → 2026-10-01 (-9d) |  |  |  |
| SDR-2-CON-RW-ZA-1070 | Aggregate base course layer | 2026-09-15 → 2026-08-31 A (-15d) | 2026-10-10 → 2026-10-01 (-9d) | 0% → 80% | 11d → 54.1d |  |
| 8 | **Demolition Work** | 2026-10-11 → 2026-10-01 (-10d) | 2026-10-24 → 2026-10-15 (-9d) |  |  |  |
| SDR-2-CON-RW-ZA-1080 | Milling of wearing course | 2026-10-11 → 2026-10-01 (-10d) | 2026-10-24 → 2026-10-15 (-9d) |  | 11d → 54.1d |  |
| 3 | **Asphalt Works** | 2026-10-25 → 2026-12-15 (+51d) | 2026-12-06 → 2027-01-20 (+45d) |  |  |  |
| SDR-2-CON-RW-ZA-1090 | Asphalt works 2st Layer with RC-01 | 2026-10-25 → 2026-12-15 (+51d) | 2026-11-11 → 2027-01-03 (+53d) |  | 11d → 2.1d | SDR-2-PRO-MAS-C-1020, SDR-2-CON-RW-ZA-1070, SDR-2-CON-RW-ZA-1080, SDR-2-PRO-DES-C-1020 FF, SDR-2-PRO-DES-C-1010 → SDR-2-PRO-DES-C-1020 FF, SDR-2-PRO-DES-C-1010, SDR-2-PRO-MAS-C-1020, SDR-2-CON-RW-ZA-1070, SDR-2-CON-RW-ZA-1080, SDR-2-PRO-ST-C-1020 |
| SDR-2-CON-RW-ZA-1100 | Asphalt works 3nd layer with RC-02 | 2026-11-12 → 2026-12-27 (+45d) | 2026-12-06 → 2027-01-20 (+45d) |  | 11d → 2.1d | SDR-2-CON-RW-ZA-1090, SDR-2-PRO-DES-C-1020 → SDR-2-PRO-DES-C-1020, SDR-2-CON-RW-ZA-1090 SS+10d |
| 4 | **Kerbstone Installation** | 2026-09-15 → 2026-11-07 (+53d) | 2026-12-30 → 2027-02-07 (+39d) |  |  |  |
| SDR-2-CON-RW-ZA-3400 | Kerbstone Installation "all Types" Part1 | 2026-09-15 → 2026-11-07 (+53d) | 2026-10-06 → 2026-11-28 (+53d) |  | 30d → 42.1d |  |
| SDR-2-CON-RW-ZA-1110 | Kerbstone Installation "all Types" Part2 | 2026-12-07 → 2027-01-13 (+37d) | 2026-12-30 → 2027-02-07 (+39d) |  | 11d → 2.1d | SDR-2-CON-CC-ZG-1610, SDR-2-CON-RW-ZA-1100, SDR-2-PRO-ST-C-1010, SDR-2-PRO-MAS-C-1010, SDR-2-PRO-MAS-C-1040 → SDR-2-CON-CC-ZG-1610, SDR-2-CON-RW-ZA-1100 SS+15d, SDR-2-PRO-ST-C-1010, SDR-2-PRO-MAS-C-1010, SDR-2-PRO-MAS-C-1040, SDR-2-CON-RW-ZA-3400 |
| 5 | **Interlock Installation** | 2026-12-31 → 2027-01-14 (+14d) | 2027-01-24 → 2027-02-07 (+14d) |  |  |  |
| SDR-2-CON-RW-ZA-1120 | Interlock Installation | 2026-12-31 → 2027-01-14 (+14d) | 2027-01-24 → 2027-02-07 (+14d) |  | 11d → 2d | SDR-2-CON-RW-ZA-1110, SDR-2-PRO-ST-C-1050, SDR-2-PRO-MAS-C-1050, SDR-2-PRO-DES-C-1040 → SDR-2-CON-RW-ZA-1110 SS, SDR-2-PRO-ST-C-1050, SDR-2-PRO-MAS-C-1050, SDR-2-PRO-DES-C-1040 |
| 6 | **Road Marking** | 2027-01-25 → 2027-02-08 (+14d) | 2027-02-27 → 2027-03-17 (+18d) |  |  |  |
| SDR-2-CON-RW-ZA-1130 | Retroreflective Thermoplastic White Traffic lines | 2027-01-25 → 2027-02-08 (+14d) | 2027-02-09 → 2027-02-24 (+15d) |  | 11d → 2d |  |
| SDR-2-CON-RW-ZA-1140 | Retroreflective Thermoplastic Yellow, Traffic lines | 2027-02-10 → 2027-02-25 (+15d) | 2027-02-27 → 2027-03-17 (+18d) |  | 11d → 2d |  |
| 7 | **Traffic Signage** | 2027-02-28 → 2027-03-18 (+18d) | 2027-03-27 → 2027-04-10 (+14d) |  |  |  |
| SDR-2-CON-RW-ZA-1150 | Single post-Traffic signs Installation | 2027-02-28 → 2027-03-18 (+18d) | 2027-03-27 → 2027-04-10 (+14d) |  | 11d → 2d |  |
| 8 | **ROAD WORKS IN ( PH2-COL-MC20 )** | 2026-04-16 → 2026-04-07 (-9d) | 2027-03-29 → 2027-04-12 (+14d) |  |  |  |
| 1 | **Earth Works Road** | 2026-04-16 → 2026-04-25 (+9d) | 2026-05-09 → 2026-07-21 (+73d) |  |  |  |
| SDR-2-CON-RW-ZA-1160 | Roadway Excavation and cuttings | 2026-04-16 → 2026-04-25 A (+9d) | 2026-05-09 → 2026-07-21 A (+73d) | 0% → 100% | 1d → none |  |
| 10 | **Backfilling Works** | 2026-05-25 → 2026-04-07 (-48d) | 2026-09-05 → 2026-06-13 (-84d) |  |  |  |
| SDR-2-CON-RW-ZA-2910 | Embankments to the Road Layer 1 | 2026-05-25 → 2026-04-07 A (-48d) | 2026-06-22 → 2026-05-23 A (-30d) | 0% → 100% | 9d → none |  |
| SDR-2-CON-RW-ZA-2920 | Embankments to the Road Layer 2 | 2026-06-23 → 2026-05-05 A (-49d) | 2026-07-16 → 2026-05-23 A (-54d) | 0% → 100% | 9d → none |  |
| SDR-2-CON-RW-ZA-2930 | Embankments to the Road Layer 3 | 2026-07-18 → 2026-05-23 A (-56d) | 2026-08-10 → 2026-06-03 A (-68d) | 0% → 100% | 9d → none |  |
| SDR-2-CON-RW-ZA-1170 | Embankments to the Road Layer 4 | 2026-08-12 → 2026-06-04 A (-69d) | 2026-09-05 → 2026-06-13 A (-84d) | 0% → 100% | 9d → none |  |
| 11 | **Subgrade** | 2026-09-06 → 2026-09-03 (-3d) | 2026-09-30 → 2026-09-24 (-6d) |  |  |  |
| SDR-2-CON-RW-ZA-1180 | Subgrade layer works | 2026-09-06 → 2026-09-03 A (-3d) | 2026-09-30 → 2026-09-24 A (-6d) | 0% → 100% | 9d → none |  |
| 9 | **Earth Works Plot** | 2026-10-01 → 2026-06-08 (-115d) | 2027-01-06 → 2026-07-26 (-164d) |  |  |  |
| SDR-2-CON-RW-ZA-2940 | Embankments to the Plot 1 Layer | 2026-10-26 → 2026-06-08 A (-140d) | 2026-11-18 → 2026-06-15 A (-156d) | 0% → 100% | 15d → none |  |
| SDR-2-CON-RW-ZA-2950 | Embankments to the Plot 2 Layer | 2026-11-19 → 2026-06-15 A (-157d) | 2026-12-13 → 2026-06-27 A (-169d) | 0% → 100% | 15d → none |  |
| SDR-2-CON-RW-ZA-1200 | Embankments to the Plot 3 Layer | 2026-12-14 → 2026-07-04 A (-163d) | 2027-01-06 → 2026-07-14 A (-176d) | 0% → 100% | 15d → none |  |
| SDR-2-CON-RW-ZA-1190 | Plot Excavation for cuttings (all types of soil) | 2026-10-01 → 2026-07-14 A (-79d) | 2026-10-25 → 2026-07-26 A (-91d) | 0% → 100% | 15d → none | SDR-2-CON-RW-ZA-1160, SDR-2-CON-RW-ZA-1180 → SDR-2-CON-RW-ZA-1160, SDR-2-CON-RW-ZA-1180 SS |
| 2 | **Base Course** | 2026-10-01 → 2026-09-26 (-5d) | 2026-10-22 → 2026-10-19 (-3d) |  |  |  |
| SDR-2-CON-RW-ZA-1210 | Aggregate base course layer | 2026-10-01 → 2026-09-26 A (-5d) | 2026-10-22 → 2026-10-19 (-3d) | 0% → 20% | 9d → 15d |  |
| 8 | **Demolition Work** | 2026-10-24 → 2026-10-20 (-4d) | 2026-10-29 → 2026-10-26 (-3d) |  |  |  |
| SDR-2-CON-RW-ZA-1220 | Milling of wearing course | 2026-10-24 → 2026-10-20 (-4d) | 2026-10-29 → 2026-10-26 (-3d) |  | 9d → 15d |  |
| 3 | **Asphalt Works** | 2026-10-31 → 2026-10-27 (-4d) | 2026-12-22 → 2026-12-19 (-3d) |  |  |  |
| SDR-2-CON-RW-ZA-1230 | Asphalt works 1st Layer with MC-01 | 2026-10-31 → 2026-10-27 (-4d) | 2026-11-09 → 2026-11-05 (-4d) |  | 9d → 15d |  |
| SDR-2-CON-RW-ZA-1240 | Asphalt works 2nd layer with RC-01 | 2026-11-10 → 2026-11-07 (-3d) | 2026-11-30 → 2026-11-26 (-4d) |  | 9d → 15d |  |
| SDR-2-CON-RW-ZA-2840 | Asphalt Works 3 rd Layer with RC-02 | 2026-12-01 → 2026-11-28 (-3d) | 2026-12-22 → 2026-12-19 (-3d) |  | 9d → 15d |  |
| 4 | **Kerbstone Installation** | 2026-10-01 → 2026-12-16 (+76d) | 2027-01-16 → 2027-01-30 (+14d) |  |  |  |
| SDR-2-CON-RW-ZA-3410 | Kerbstone Installation "all Types" Part 1 | 2026-10-01 → 2026-12-16 (+76d) | 2026-10-21 → 2027-01-05 (+76d) |  | 18d → 0d |  |
| SDR-2-CON-RW-ZA-1250 | Kerbstone Installation "all Types" Part 2 | 2026-12-23 → 2027-01-06 (+14d) | 2027-01-16 → 2027-01-30 (+14d) |  | 9d → 0d | SDR-2-CON-RW-ZA-2840 → SDR-2-CON-RW-ZA-2840, SDR-2-CON-RW-ZA-3410 |
| 5 | **Interlock Installation** | 2027-01-17 → 2027-01-31 (+14d) | 2027-02-09 → 2027-02-24 (+15d) |  |  |  |
| SDR-2-CON-RW-ZA-1260 | Interlock Installation | 2027-01-17 → 2027-01-31 (+14d) | 2027-02-09 → 2027-02-24 (+15d) |  | 9d → 0d |  |
| 6 | **Road Marking** | 2027-02-10 → 2027-02-25 (+15d) | 2027-03-03 → 2027-03-22 (+19d) |  |  |  |
| SDR-2-CON-RW-ZA-1270 | Retroreflective Thermoplastic White Traffic lines | 2027-02-10 → 2027-02-25 (+15d) | 2027-02-23 → 2027-03-14 (+19d) |  | 9d → 0d |  |
| SDR-2-CON-RW-ZA-1280 | Retroreflective Thermoplastic Yellow, Traffic lines | 2027-02-24 → 2027-03-15 (+19d) | 2027-03-03 → 2027-03-22 (+19d) |  | 9d → 0d |  |
| 7 | **Traffic Signage** | 2027-03-04 → 2027-03-23 (+19d) | 2027-03-29 → 2027-04-12 (+14d) |  |  |  |
| SDR-2-CON-RW-ZA-1290 | Single post-Traffic signs Installation | 2027-03-04 → 2027-03-23 (+19d) | 2027-03-29 → 2027-04-12 (+14d) |  | 9d → 0d |  |
| 13 | **ROAD WORKS IN ( PH2-A-MCI0 )** | 2026-04-21 → 2026-04-28 (+7d) | 2027-03-28 → 2027-04-08 (+11d) |  |  |  |
| 1 | **Earth Works Road** | 2026-04-21 → 2026-04-28 (+7d) | 2026-05-13 → 2026-05-20 (+7d) |  |  |  |
| SDR-2-CON-RW-ZA-1300 | Roadway Excavation and cuttings | 2026-04-21 → 2026-04-28 A (+7d) | 2026-05-13 → 2026-05-20 A (+7d) | 0% → 100% | 1d → none |  |
| 10 | **Backfilling Works** | 2026-05-14 → 2026-04-29 (-15d) | 2026-08-25 → 2026-06-14 (-72d) |  |  |  |
| SDR-2-CON-RW-ZA-2960 | Embankments to the Road 1 Layer | 2026-05-14 → 2026-04-29 A (-15d) | 2026-06-11 → 2026-05-07 A (-35d) | 0% → 100% | 17d → none |  |
| SDR-2-CON-RW-ZA-2970 | Embankments to the Road 2 Layer | 2026-06-13 → 2026-05-07 A (-37d) | 2026-07-06 → 2026-05-14 A (-53d) | 0% → 100% | 17d → none |  |
| SDR-2-CON-RW-ZA-2980 | Embankments to the Road 3 Layer | 2026-07-08 → 2026-06-01 A (-37d) | 2026-08-01 → 2026-06-09 A (-53d) | 0% → 100% | 17d → none |  |
| SDR-2-CON-RW-ZA-1310 | Embankments to the Road 4 Layer | 2026-08-02 → 2026-06-09 A (-54d) | 2026-08-25 → 2026-06-14 A (-72d) | 0% → 100% | 17d → none |  |
| 11 | **Subgrade** | 2026-08-26 → 2026-09-28 (+33d) | 2026-09-17 → 2026-10-20 (+33d) |  |  |  |
| SDR-2-CON-RW-ZA-1320 | Subgrade layer works | 2026-08-26 → 2026-09-28 (+33d) | 2026-09-17 → 2026-10-20 (+33d) |  | 17d → 3d |  |
| 9 | **Earth Works Plot** | 2026-09-19 → 2026-06-08 (-103d) | 2026-12-06 → 2026-07-20 (-139d) |  |  |  |

| ID | Task | Start | Finish | Complete | Total float | Predecessors |
| --- | --- | --- | --- | --- | --- | --- |
| SDR-2-CON-RW-ZA-2990 | Embankments to the Plot 1 Layer | 2026-10-14 → 2026-06-08 A (-128d) | 2026-11-07 → 2026-06-15 A (-145d) | 0% → 100% | 25d → none | SDR-2-CON-RW-ZA-3420, SDR-2-CON-RW-ZA-1310, SDR-2-CON-RW-ZA-1330 → SDR-2-CON-RW-ZA-1310, SDR-2-CON-RW-ZA-1330 |
| SDR-2-CON-RW-ZA-1340 | Embankments to the Plot 2 Layer | 2026-11-12 → 2026-06-15 A (-150d) | 2026-12-06 → 2026-06-27 A (-162d) | 0% → 100% | 35d → none |  |
| SDR-2-CON-RW-ZA-1330 | Plot Excavation for cuttings (all types of soil) | 2026-09-19 → 2026-07-13 A (-68d) | 2026-10-13 → 2026-07-20 A (-85d) | 0% → 100% | 25d → none | SDR-2-CON-RW-ZA-1300, SDR-2-CON-RW-ZA-1320 → SDR-2-CON-RW-ZA-1300 |
| 2 | **Base Course** | 2026-09-19 → 2026-10-21 (+32d) | 2026-10-12 → 2026-11-12 (+31d) |  |  |  |
| SDR-2-CON-RW-ZA-1350 | Aggregate base course layer | 2026-09-19 → 2026-10-21 (+32d) | 2026-10-12 → 2026-11-12 (+31d) |  | 27d → 3d |  |
| 8 | **Demolition Work** | 2026-10-26 → 2026-11-14 (+19d) | 2026-10-31 → 2026-11-18 (+18d) |  |  |  |
| SDR-2-CON-RW-ZA-1360 | Milling of wearing course | 2026-10-26 → 2026-11-14 (+19d) | 2026-10-31 → 2026-11-18 (+18d) |  | 16d → 3d |  |
| 3 | **Asphalt Works** | 2026-11-01 → 2026-11-19 (+18d) | 2026-11-30 → 2026-12-19 (+19d) |  |  |  |
| SDR-2-CON-RW-ZA-1370 | Asphalt works 1st Layer with MC-01 | 2026-11-01 → 2026-11-19 (+18d) | 2026-11-05 → 2026-11-24 (+19d) |  | 16d → 3d | SDR-2-PRO-ST-C-1020, SDR-2-CON-RW-ZA-1350, SDR-2-CON-RW-ZA-1360 → SDR-2-CON-RW-ZA-1350, SDR-2-CON-RW-ZA-1360 |
| SDR-2-CON-RW-ZA-1380 | Asphalt works 2nd layer with RC-02 | 2026-11-07 → 2026-11-25 (+18d) | 2026-11-30 → 2026-12-19 (+19d) |  | 16d → 3d |  |
| 4 | **Kerbstone Installation** | 2026-09-19 → 2026-10-07 (+18d) | 2026-12-24 → 2027-01-12 (+19d) |  |  |  |
| SDR-2-CON-RW-ZA-3420 | Kerbstone Installation "all Types" Part 1 | 2026-09-19 → 2026-10-07 (+18d) | 2026-10-10 → 2026-10-27 (+17d) |  | 17d → 5d | SDR-2-CON-RW-ZA-1320 → SDR-2-CON-RW-ZA-1320 SS+8d |
| SDR-2-CON-RW-ZA-1390 | Kerbstone Installation "all Types" Part 2 | 2026-12-01 → 2026-12-20 (+19d) | 2026-12-24 → 2027-01-12 (+19d) |  | 16d → 3d |  |
| 5 | **Interlock Installation** | 2026-12-26 → 2027-01-13 (+18d) | 2027-01-18 → 2027-02-06 (+19d) |  |  |  |
| SDR-2-CON-RW-ZA-1400 | Interlock Installation | 2026-12-26 → 2027-01-13 (+18d) | 2027-01-18 → 2027-02-06 (+19d) |  | 16d → 3d |  |
| 6 | **Road Marking** | 2027-01-26 → 2027-02-07 (+12d) | 2027-02-28 → 2027-03-16 (+16d) |  |  |  |
| SDR-2-CON-RW-ZA-1410 | Retroreflective Thermoplastic White Traffic lines | 2027-01-26 → 2027-02-07 (+12d) | 2027-02-10 → 2027-02-23 (+13d) |  | 10d → 3d | SDR-2-CON-CC-ZG-1660, SDR-2-CON-RW-ZA-1400 → SDR-2-CON-RW-ZA-1400 |
| SDR-2-CON-RW-ZA-1420 | Retroreflective Thermoplastic Yellow, Traffic lines | 2027-02-11 → 2027-02-24 (+13d) | 2027-02-28 → 2027-03-16 (+16d) |  | 10d → 3d |  |
| 7 | **Traffic Signage** | 2027-03-01 → 2027-03-17 (+16d) | 2027-03-28 → 2027-04-08 (+11d) |  |  |  |
| SDR-2-CON-RW-ZA-1430 | Single post-Traffic signs Installation | 2027-03-01 → 2027-03-17 (+16d) | 2027-03-28 → 2027-04-08 (+11d) |  | 10d → 3d |  |
| 2 | **ROAD WORKS IN ( PH2-A-MCA0 )** | 2026-04-26 → 2026-04-22 (-4d) | 2027-03-22 → 2027-04-06 (+15d) |  |  |  |
| 1 | **Earth Works Road** | 2026-04-26 → 2026-04-22 (-4d) | 2026-05-18 → 2026-05-03 (-15d) |  |  |  |
| SDR-2-CON-RW-ZA-1440 | Roadway Excavation and cuttings | 2026-04-26 → 2026-04-22 A (-4d) | 2026-05-18 → 2026-05-03 A (-15d) | 0% → 100% | 1d → none |  |
| 10 | **Backfilling Works** | 2026-05-19 → 2026-05-03 (-16d) | 2026-08-30 → 2026-06-06 (-85d) |  |  |  |
| SDR-2-CON-RW-ZA-3000 | Embankments to the Road 1 Layer | 2026-05-19 → 2026-05-03 A (-16d) | 2026-06-16 → 2026-05-10 A (-37d) | 0% → 100% | 15d → none |  |
| SDR-2-CON-RW-ZA-3010 | Embankments to the Road 2 Layer | 2026-06-17 → 2026-05-11 A (-37d) | 2026-07-11 → 2026-05-19 A (-53d) | 0% → 100% | 15d → none |  |
| SDR-2-CON-RW-ZA-3020 | Embankments to the Road 3 Layer | 2026-07-12 → 2026-05-19 A (-54d) | 2026-08-04 → 2026-05-24 A (-72d) | 0% → 100% | 15d → none |  |
| SDR-2-CON-RW-ZA-1450 | Embankments to the Road 4 Layer | 2026-08-06 → 2026-05-24 A (-74d) | 2026-08-30 → 2026-06-06 A (-85d) | 0% → 100% | 15d → none |  |
| 11 | **Subgrade** | 2026-08-31 → 2026-09-01 (+1d) | 2026-09-24 → 2026-10-01 (+7d) |  |  |  |
| SDR-2-CON-RW-ZA-1460 | Subgrade layer works | 2026-08-31 → 2026-09-01 A (+1d) | 2026-09-24 → 2026-10-01 (+7d) | 0% → 25% | 15d → 12d |  |
| 9 | **Earth Works Plot** | 2026-09-26 → 2026-06-04 (-114d) | 2026-12-07 → 2026-10-26 (-42d) |  |  |  |
| SDR-2-CON-RW-ZA-3030 | Embankments to the Plot 1 Layer | 2026-10-20 → 2026-06-04 A (-138d) | 2026-11-12 → 2026-06-14 A (-151d) | 0% → 100% | 22d → none | SDR-2-CON-RW-ZA-1330, SDR-2-CON-RW-ZA-1470 → SDR-2-CON-RW-ZA-1330 |
| SDR-2-CON-RW-ZA-1480 | Embankments to the Plot 2 Layer | 2026-11-14 → 2026-06-22 A (-145d) | 2026-12-07 → 2026-09-28 (-70d) |  | 22d → 82d |  |
| SDR-2-CON-RW-ZA-1470 | Plot Excavation for cuttings (all types of soil) | 2026-09-26 → 2026-10-03 (+7d) | 2026-10-19 → 2026-10-26 (+7d) |  | 22d → 43d |  |
| 2 | **Base Course** | 2026-09-26 → 2026-10-03 (+7d) | 2026-10-12 → 2026-10-19 (+7d) |  |  |  |
| SDR-2-CON-RW-ZA-1490 | Aggregate base course layer | 2026-09-26 → 2026-10-03 (+7d) | 2026-10-12 → 2026-10-19 (+7d) |  | 15d → 12d |  |
| 8 | **Demolition Work** | 2026-10-13 → 2026-10-28 (+15d) | 2026-10-17 → 2026-11-01 (+15d) |  |  |  |
| SDR-2-CON-RW-ZA-1500 | Milling of wearing course | 2026-10-13 → 2026-10-28 (+15d) | 2026-10-17 → 2026-11-01 (+15d) |  | 15d → 5d |  |
| 3 | **Asphalt Works** | 2026-10-18 → 2026-11-02 (+15d) | 2026-11-30 → 2026-12-15 (+15d) |  |  |  |
| SDR-2-CON-RW-ZA-1510 | Asphalt works 1st Layer with MC-01 | 2026-10-18 → 2026-11-02 (+15d) | 2026-11-07 → 2026-11-22 (+15d) |  | 15d → 5d |  |
| SDR-2-CON-RW-ZA-1520 | Asphalt works 2nd layer with RC-02 | 2026-11-08 → 2026-11-23 (+15d) | 2026-11-30 → 2026-12-15 (+15d) |  | 15d → 5d |  |
| 4 | **Kerbstone Installation** | 2026-09-26 → 2026-10-03 (+7d) | 2026-12-24 → 2027-01-09 (+16d) |  |  |  |
| SDR-2-CON-RW-ZA-3440 | Kerbstone Installation "all Types" Part 1 | 2026-09-26 → 2026-10-03 (+7d) | 2026-10-19 → 2026-10-26 (+7d) |  | 39d → 48d |  |
| SDR-2-CON-RW-ZA-1530 | Kerbstone Installation "all Types" Part 2 | 2026-12-01 → 2026-12-16 (+15d) | 2026-12-24 → 2027-01-09 (+16d) |  | 15d → 5d | SDR-2-CON-RW-ZA-1520 → SDR-2-CON-RW-ZA-1520, SDR-2-CON-RW-ZA-3440 |
| 5 | **Interlock Installation** | 2026-12-26 → 2027-01-10 (+15d) | 2027-01-18 → 2027-02-02 (+15d) |  |  |  |
| SDR-2-CON-RW-ZA-1540 | Interlock Installation | 2026-12-26 → 2027-01-10 (+15d) | 2027-01-18 → 2027-02-02 (+15d) |  | 15d → 5d |  |
| 6 | **Road Marking** | 2027-01-19 → 2027-02-03 (+15d) | 2027-02-21 → 2027-03-14 (+21d) |  |  |  |
| SDR-2-CON-RW-ZA-1550 | Retroreflective Thermoplastic White Traffic lines | 2027-01-19 → 2027-02-03 (+15d) | 2027-02-03 → 2027-02-18 (+15d) |  | 15d → 5d |  |
| SDR-2-CON-RW-ZA-1560 | Retroreflective Thermoplastic Yellow, Traffic lines | 2027-02-04 → 2027-02-20 (+16d) | 2027-02-21 → 2027-03-14 (+21d) |  | 15d → 5d |  |
| 7 | **Traffic Signage** | 2027-02-23 → 2027-03-15 (+20d) | 2027-03-22 → 2027-04-06 (+15d) |  |  |  |
| SDR-2-CON-RW-ZA-1570 | Single post-Traffic signs Installation | 2027-02-23 → 2027-03-15 (+20d) | 2027-03-22 → 2027-04-06 (+15d) |  | 15d → 5d |  |
| 3 | **ROAD WORKS IN ( PH2-A-MCB0 )** | 2026-04-30 → 2026-04-22 (-8d) | 2027-03-28 → 2027-03-23 (-5d) |  |  |  |
| 1 | **Earth Works Road** | 2026-04-30 → 2026-04-22 (-8d) | 2026-05-23 → 2026-05-24 (+1d) |  |  |  |
| SDR-2-CON-RW-ZA-1580 | Roadway Excavation and cuttings | 2026-04-30 → 2026-04-22 A (-8d) | 2026-05-23 → 2026-05-24 A (+1d) | 0% → 100% | 1d → none |  |
| 10 | **Backfilling Works** | 2026-05-26 → 2026-04-28 (-28d) | 2026-09-06 → 2026-06-06 (-92d) |  |  |  |
| SDR-2-CON-RW-ZA-3040 | Embankments to the Road 1 Layer | 2026-05-26 → 2026-04-28 A (-28d) | 2026-06-23 → 2026-05-11 A (-43d) | 0% → 100% | 28d → none |  |
| SDR-2-CON-RW-ZA-3050 | Embankments to the Road 2 Layer | 2026-06-24 → 2026-05-09 A (-46d) | 2026-07-18 → 2026-05-18 A (-61d) | 0% → 100% | 28d → none |  |
| SDR-2-CON-RW-ZA-3060 | Embankments to the Road 3 Layer | 2026-07-19 → 2026-05-16 A (-64d) | 2026-08-11 → 2026-05-24 A (-79d) | 0% → 100% | 28d → none |  |
| SDR-2-CON-RW-ZA-1590 | Embankments to the Road 4 Layer | 2026-08-13 → 2026-05-24 A (-81d) | 2026-09-06 → 2026-06-06 A (-92d) | 0% → 100% | 28d → none |  |
| 11 | **Subgrade** | 2026-09-07 → 2026-09-01 (-6d) | 2026-09-26 → 2026-09-28 (+2d) |  |  |  |
| SDR-2-CON-RW-ZA-1600 | Subgrade layer works | 2026-09-07 → 2026-09-01 A (-6d) | 2026-09-26 → 2026-09-28 (+2d) | 0% → 25% | 28d → 26d |  |
| 9 | **Earth Works Plot** | 2026-09-27 → 2026-06-08 (-111d) | 2026-12-10 → 2026-09-28 (-73d) |  |  |  |
| SDR-2-CON-RW-ZA-1610 | Plot Excavation for cuttings (all types of soil) | 2026-09-27 → 2026-06-08 A (-111d) | 2026-10-20 → 2026-09-28 (-22d) | 0% → 85% | 30d → 49d | SDR-2-CON-RW-ZA-1580, SDR-2-CON-RW-ZA-1600 → SDR-2-CON-RW-ZA-1580, SDR-2-CON-RW-ZA-1600 FF |
| SDR-2-CON-RW-ZA-3070 | Embankments to the Plot 1 Layer | 2026-10-22 → 2026-06-15 A (-129d) | 2026-11-15 → 2026-06-25 A (-143d) | 0% → 100% | 39d → none | SDR-2-CON-RW-ZA-3440 FS+2d, SDR-2-CON-RW-ZA-3420, SDR-2-CON-RW-ZA-1610 → SDR-2-CON-RW-ZA-1610 SS |
| SDR-2-CON-RW-ZA-1620 | Embankments to the Plot 2 Layer | 2026-11-17 → 2026-06-30 A (-140d) | 2026-12-10 → 2026-09-28 (-73d) |  | 39d → 152d |  |
| 8 | **Demolition Work** | 2026-10-20 → 2026-10-22 (+2d) | 2026-10-22 → 2026-10-25 (+3d) |  |  |  |
| SDR-2-CON-RW-ZA-1640 | Milling of wearing course | 2026-10-20 → 2026-10-22 (+2d) | 2026-10-22 → 2026-10-25 (+3d) |  | 28d → 26d |  |
| 2 | **Base Course** | 2026-09-27 → 2026-09-29 (+2d) | 2026-10-19 → 2026-10-21 (+2d) |  |  |  |
| SDR-2-CON-RW-ZA-1630 | Aggregate base course layer | 2026-09-27 → 2026-09-29 (+2d) | 2026-10-19 → 2026-10-21 (+2d) |  | 28d → 26d |  |
| 3 | **Asphalt Works** | 2026-10-24 → 2026-10-26 (+2d) | 2026-11-30 → 2026-12-02 (+2d) |  |  |  |

| ID | Task | Start | Finish | Complete | Total float | Predecessors |
| --- | --- | --- | --- | --- | --- | --- |
| SDR-2-CON-RW-ZA-1650 | Asphalt works 1st Layer with MC-01 | 2026-10-24 → 2026-10-26 (+2d) | 2026-11-16 → 2026-11-18 (+2d) |  | 28d → 26d |  |
| SDR-2-CON-RW-ZA-1660 | Asphalt works 2nd layer with RC-02 | 2026-11-17 → 2026-11-19 (+2d) | 2026-11-30 → 2026-12-02 (+2d) |  | 28d → 26d |  |
| 4 | **Kerbstone Installation** | 2026-09-27 → 2026-09-29 (+2d) | 2026-12-30 → 2026-12-26 (-4d) |  |  |  |
| SDR-2-CON-RW-ZA-3430 | Kerbstone Installation "all Types" Part 1 | 2026-09-27 → 2026-09-29 (+2d) | 2026-10-19 → 2026-10-21 (+2d) |  | 43d → 44d |  |
| SDR-2-CON-RW-ZA-1670 | Kerbstone Installation "all Types" Part 2 | 2026-12-08 → 2026-12-03 (-5d) | 2026-12-30 → 2026-12-26 (-4d) |  | 22d → 26d |  |
| 5 | **Interlock Installation** | 2026-12-31 → 2026-12-27 (-4d) | 2027-01-24 → 2027-01-19 (-5d) |  |  |  |
| SDR-2-CON-RW-ZA-1680 | Interlock Installation | 2026-12-31 → 2026-12-27 (-4d) | 2027-01-24 → 2027-01-19 (-5d) |  | 22d → 26d |  |
| 6 | **Road Marking** | 2027-01-25 → 2027-01-20 (-5d) | 2027-02-28 → 2027-02-23 (-5d) |  |  |  |
| SDR-2-CON-RW-ZA-1690 | Retroreflective Thermoplastic White Traffic lines | 2027-01-25 → 2027-01-20 (-5d) | 2027-02-10 → 2027-02-06 (-4d) |  | 22d → 26d |  |
| SDR-2-CON-RW-ZA-1700 | Retroreflective Thermoplastic Yellow, Traffic lines | 2027-02-11 → 2027-02-07 (-4d) | 2027-02-28 → 2027-02-23 (-5d) |  | 22d → 26d |  |
| 7 | **Traffic Signage** | 2027-03-01 → 2027-02-24 (-5d) | 2027-03-28 → 2027-03-23 (-5d) |  |  |  |
| SDR-2-CON-RW-ZA-1710 | Single post-Traffic signs Installation | 2027-03-01 → 2027-02-24 (-5d) | 2027-03-28 → 2027-03-23 (-5d) |  | 22d → 26d |  |
| 7 | **ROAD WORKS IN ( PH2-A-MCC0 )** | 2026-05-05 → 2026-04-09 (-26d) | 2027-03-20 → 2027-03-31 (+11d) |  |  |  |
| 1 | **Earth Works Road** | 2026-05-05 → 2026-05-09 (+4d) |  |  |  |  |
| SDR-2-CON-RW-ZA-1720 | Roadway Excavation and cuttings | 2026-05-05 → 2026-05-09 A (+4d) | 2026-06-01 A | 0% → 100% | 1d → none |  |
| 10 | **Backfilling Works** | 2026-06-02 → 2026-04-09 (-54d) | 2026-09-12 → 2026-07-05 (-69d) |  |  |  |
| SDR-2-CON-RW-ZA-3080 | Embankments to the Road 1 Layer | 2026-06-02 → 2026-04-09 A (-54d) | 2026-06-25 → 2026-04-22 A (-64d) | 0% → 100% | 17d → none |  |
| SDR-2-CON-RW-ZA-3090 | Embankments to the Road 2 Layer | 2026-06-27 → 2026-04-22 A (-66d) | 2026-07-20 → 2026-04-30 A (-81d) | 0% → 100% | 17d → none |  |
| SDR-2-CON-RW-ZA-3100 | Embankments to the Road 3 Layer | 2026-07-21 → 2026-06-22 A (-29d) | 2026-08-13 → 2026-06-29 A (-45d) | 0% → 100% | 17d → none | SDR-2-PRO-DEL-M-1050, SDR-2-PRO-DEL-M-1030 FS+3d, SDR-2-CON-RW-ZA-3090 → SDR-2-CON-RW-ZA-3090, SDR-2-PRO-DEL-M-1050 SS, SDR-2-PRO-DEL-M-1030 SS |
| SDR-2-CON-RW-ZA-1730 | Embankments to the Road 4 Layer | 2026-08-19 → 2026-06-29 A (-51d) | 2026-09-12 → 2026-07-05 A (-69d) | 0% → 100% | 17d → none |  |
| 11 | **Subgrade** | 2026-09-13 → 2026-07-01 (-74d) | 2026-10-01 → 2026-09-17 (-14d) |  |  |  |
| SDR-2-CON-RW-ZA-1740 | Subgrade layer works | 2026-09-13 → 2026-07-01 A (-74d) | 2026-10-01 → 2026-09-17 A (-14d) | 0% → 100% | 17d → none |  |
| 9 | **Earth Works Plot** | 2026-10-03 → 2026-06-08 (-117d) | 2026-12-14 → 2026-11-05 (-39d) |  |  |  |
| SDR-2-CON-RW-ZA-1750 | Plot Excavation for cuttings (all types of soil) | 2026-10-03 → 2026-06-08 A (-117d) | 2026-10-25 → 2026-10-20 (-5d) | 0% → 60% | 35d → 33.1d | SDR-2-PRO-DEL-E-1160, SDR-2-CON-RW-ZA-1720, SDR-2-CON-RW-ZA-1740 → SDR-2-CON-RW-ZA-1720, SDR-2-CON-RW-ZA-1740, SDR-2-PRO-DEL-E-1160 FF |
| SDR-2-CON-RW-ZA-3110 | Embankments to the Plot 1 Layer | 2026-10-26 → 2026-07-07 A (-111d) | 2026-11-18 → 2026-11-05 A (-13d) | 0% → 100% | 35d → none | SDR-2-CON-RW-ZA-3450, SDR-2-CON-RW-ZA-1470 FF+3d, SDR-2-CON-RW-ZA-1750 → SDR-2-CON-RW-ZA-1750 |
| SDR-2-CON-RW-ZA-1760 | Embankments to the Plot 2 Layer | 2026-11-21 → 2026-07-18 A (-126d) | 2026-12-14 → 2026-10-21 (-54d) | 0% → 80% | 39d → 105.4d |  |
| 2 | **Base Course** | 2026-10-03 → 2026-08-31 (-33d) | 2026-10-26 → 2026-09-30 (-26d) |  |  |  |
| SDR-2-CON-RW-ZA-1770 | Aggregate base course layer | 2026-10-03 → 2026-08-31 A (-33d) | 2026-10-26 → 2026-09-30 (-26d) | 0% → 65% | 17d → 42d |  |
| 8 | **Demolition Work** | 2026-10-27 → 2026-10-01 (-26d) | 2026-10-29 → 2026-10-04 (-25d) |  |  |  |
| SDR-2-CON-RW-ZA-1780 | Milling of wearing course | 2026-10-27 → 2026-10-01 (-26d) | 2026-10-29 → 2026-10-04 (-25d) |  | 17d → 42d |  |
| 3 | **Asphalt Works** | 2026-10-31 → 2026-11-11 (+11d) | 2026-11-30 → 2026-12-12 (+12d) |  |  |  |
| SDR-2-CON-RW-ZA-1790 | Asphalt works 1st Layer with MC-01 | 2026-10-31 → 2026-11-11 (+11d) | 2026-11-17 → 2026-11-29 (+12d) |  | 17d → 10d |  |
| SDR-2-CON-RW-ZA-1800 | Asphalt works 2nd layer with RC-02 | 2026-11-18 → 2026-11-30 (+12d) | 2026-11-30 → 2026-12-12 (+12d) |  | 17d → 10d |  |
| 4 | **Kerbstone Installation** | 2026-10-03 → 2026-09-28 (-5d) | 2026-12-23 → 2027-01-04 (+12d) |  |  |  |
| SDR-2-CON-RW-ZA-3450 | Kerbstone Installation "all Types" Part 1 | 2026-10-03 → 2026-09-28 (-5d) | 2026-10-22 → 2026-10-18 (-4d) |  | 37d → 58d |  |
| SDR-2-CON-RW-ZA-1810 | Kerbstone Installation "all Types" Part 2 | 2026-12-01 → 2026-12-13 (+12d) | 2026-12-23 → 2027-01-04 (+12d) |  | 17d → 10d |  |
| 5 | **Interlock Installation** | 2026-12-24 → 2027-01-05 (+12d) | 2027-01-17 → 2027-01-28 (+11d) |  |  |  |
| SDR-2-CON-RW-ZA-1820 | Interlock Installation | 2026-12-24 → 2027-01-05 (+12d) | 2027-01-17 → 2027-01-28 (+11d) |  | 17d → 10d |  |
| 6 | **Road Marking** | 2027-01-18 → 2027-01-30 (+12d) | 2027-02-18 → 2027-03-03 (+13d) |  |  |  |
| SDR-2-CON-RW-ZA-1830 | Retroreflective Thermoplastic White Traffic lines | 2027-01-18 → 2027-01-30 (+12d) | 2027-02-02 → 2027-02-14 (+12d) |  | 17d → 10d |  |
| SDR-2-CON-RW-ZA-1840 | Retroreflective Thermoplastic Yellow, Traffic lines | 2027-02-03 → 2027-02-15 (+12d) | 2027-02-18 → 2027-03-03 (+13d) |  | 17d → 10d |  |
| 7 | **Traffic Signage** | 2027-02-20 → 2027-03-04 (+12d) | 2027-03-20 → 2027-03-31 (+11d) |  |  |  |
| SDR-2-CON-RW-ZA-1850 | Single post-Traffic signs Installation | 2027-02-20 → 2027-03-04 (+12d) | 2027-03-20 → 2027-03-31 (+11d) |  | 17d → 10d |  |
| 1 | **Earth Works Road** |  | 2026-06-04 → 2026-05-12 (-23d) |  |  |  |
| SDR-2-CON-RW-ZA-1860 | Roadway Excavation and cuttings | 2026-05-09 A | 2026-06-04 → 2026-05-12 A (-23d) | 0% → 100% | 1d → none |  |
| 10 | **Backfilling Works** | 2026-06-06 → 2026-05-15 (-22d) | 2026-09-12 → 2026-07-05 (-69d) |  |  |  |
| SDR-2-CON-RW-ZA-3120 | Embankments to the Road 1 Layer | 2026-06-06 → 2026-05-15 A (-22d) | 2026-06-29 → 2026-05-24 A (-36d) | 0% → 100% | 16d → none |  |
| SDR-2-CON-RW-ZA-3130 | Embankments to the Road 2 Layer | 2026-06-30 → 2026-05-24 A (-37d) | 2026-07-23 → 2026-06-04 A (-49d) | 0% → 100% | 16d → none |  |
| SDR-2-CON-RW-ZA-3140 | Embankments to the Road 3 Layer | 2026-07-25 → 2026-06-08 A (-47d) | 2026-08-17 → 2026-06-18 A (-60d) | 0% → 100% | 16d → none |  |
| SDR-2-CON-RW-ZA-1870 | Embankments to the Road 4 Layer | 2026-08-19 → 2026-06-24 A (-56d) | 2026-09-12 → 2026-07-05 A (-69d) | 0% → 100% | 16d → none |  |
| 11 | **Subgrade** | 2026-09-13 → 2026-08-11 (-33d) | 2026-10-06 → 2026-09-17 (-19d) |  |  |  |
| SDR-2-CON-RW-ZA-1880 | Subgrade layer works | 2026-09-13 → 2026-08-11 A (-33d) | 2026-10-06 → 2026-09-17 A (-19d) | 0% → 100% | 16d → none | SDR-2-PRO-DEL-E-1100, SDR-2-PRO-DES-C-1070, SDR-2-CON-RW-ZA-1870 → SDR-2-PRO-DES-C-1070, SDR-2-CON-RW-ZA-1870 |
| 9 | **Earth Works Plot** | 2026-10-07 → 2026-06-09 (-120d) | 2026-12-20 → 2026-09-28 (-83d) |  |  |  |
| SDR-2-CON-RW-ZA-3150 | Embankments to the Plot 1 Layer | 2026-11-01 → 2026-06-09 A (-145d) | 2026-11-24 → 2026-06-14 A (-163d) | 0% → 100% | 19d → none | SDR-2-CON-RW-ZA-1890 → SDR-2-CON-RW-ZA-1890 SS |
| SDR-2-CON-RW-ZA-1890 | Plot Excavation for cuttings (all types of soil) | 2026-10-07 → 2026-06-15 A (-114d) | 2026-10-31 → 2026-09-28 (-33d) | 0% → 30% | 16d → 47d |  |
| SDR-2-CON-RW-ZA-1900 | Embankments to the Plot 2 Layer | 2026-11-26 → 2026-06-23 A (-156d) | 2026-12-20 → 2026-09-28 (-83d) | 0% → 30% | 19d → 116d |  |
| 2 | **Base Course** | 2026-10-07 → 2026-08-30 (-38d) | 2026-10-29 → 2026-09-28 (-31d) |  |  |  |
| SDR-2-CON-RW-ZA-1910 | Aggregate base course layer | 2026-10-07 → 2026-08-30 A (-38d) | 2026-10-29 → 2026-09-28 (-31d) | 0% → 60% | 21d → 51d |  |
| 8 | **Demolition Work** | 2026-10-31 → 2026-10-19 (-12d) | 2026-11-05 → 2026-10-26 (-10d) |  |  |  |
| SDR-2-CON-RW-ZA-1920 | Milling of wearing course | 2026-10-31 → 2026-10-19 (-12d) | 2026-11-05 → 2026-10-26 (-10d) |  | 21d → 33.1d |  |
| 4 | **Kerbstone Installation** | 2026-10-07 → 2026-09-28 (-9d) |  |  |  |  |
| SDR-2-CON-RW-ZA-3460 | Kerbstone Installation "all Types" Part 1 | 2026-10-07 → 2026-09-28 (-9d) | 2026-10-27 → 2026-10-18 (-9d) |  | 17d → 56d |  |
| SDR-2-CON-RW-ZA-1950 | Kerbstone Installation "all Types" Part 2 |  |  |  | 5d → 8d | SDR-2-CON-RW-ZA-1940 → SDR-2-CON-RW-ZA-1940, SDR-2-CON-RW-ZA-3460 |
| 5 | **ROAD WORKS IN ( PH2-A-MCE0 )** | 2026-05-12 → 2026-04-07 (-35d) | 2027-03-21 → 2027-03-18 (-3d) |  |  |  |
| 1 | **Earth Works Road** | 2026-05-12 → 2026-05-02 (-10d) | 2026-06-08 → 2026-06-01 (-7d) |  |  |  |
| SDR-2-CON-RW-ZA-2000 | Roadway Excavation and cuttings | 2026-05-12 → 2026-05-02 A (-10d) | 2026-06-08 → 2026-06-01 A (-7d) | 0% → 100% | 1d → none |  |
| 10 | **Backfilling Works** | 2026-06-09 → 2026-04-07 (-63d) | 2026-09-14 → 2026-06-16 (-90d) |  |  |  |
| SDR-2-CON-RW-ZA-3160 | Embankments to the Road 1 Layer | 2026-06-09 → 2026-04-07 A (-63d) | 2026-07-02 → 2026-05-24 A (-39d) | 0% → 100% | 17d → none |  |
| SDR-2-CON-RW-ZA-3170 | Embankments to the Road 2 Layer | 2026-07-04 → 2026-05-10 A (-55d) | 2026-07-27 → 2026-05-19 A (-69d) | 0% → 100% | 17d → none |  |
| SDR-2-CON-RW-ZA-3180 | Embankments to the Road 3 Layer | 2026-07-28 → 2026-05-19 A (-70d) | 2026-08-20 → 2026-06-01 A (-80d) | 0% → 100% | 17d → none |  |

| ID | Task | Start | Finish | Complete | Total float | Predecessors |
| --- | --- | --- | --- | --- | --- | --- |
| SDR-2-CON-RW-ZA-2010 | Embankments to the Road 4 Layer | 2026-08-22 → 2026-06-03 A (-80d) | 2026-09-14 → 2026-06-16 A (-90d) | 0% → 100% | 17d → none | SDR-2-PRO-DEL-E-1100, SDR-2-CON-RW-ZA-3180, SDR-2-CON-RW-ZA-3180 FF → SDR-2-CON-RW-ZA-3180, SDR-2-CON-RW-ZA-3180 FF |
| 11 | **Subgrade** | 2026-09-15 → 2026-09-28 (+13d) | 2026-10-08 → 2026-10-20 (+12d) |  |  |  |
| SDR-2-CON-RW-ZA-2020 | Subgrade layer works | 2026-09-15 → 2026-09-28 (+13d) | 2026-10-08 → 2026-10-20 (+12d) |  | 17d → 10d |  |
| 9 | **Earth Works Plot** | 2026-10-10 → 2026-06-14 (-118d) | 2026-12-22 → 2026-10-21 (-62d) |  |  |  |
| SDR-2-CON-RW-ZA-3190 | Embankments to the Plot 1 Layer | 2026-11-03 → 2026-06-14 A (-142d) | 2026-11-26 → 2026-10-20 (-37d) | 0% → 30% | 35d → 77d | SDR-2-CON-RW-ZA-2030 → SDR-2-CON-RW-ZA-2030 FF |
| SDR-2-CON-RW-ZA-2030 | Plot Excavation for cuttings (all types of soil) | 2026-10-10 → 2026-06-15 A (-117d) | 2026-11-02 → 2026-10-20 (-13d) | 0% → 25% |  | SDR-2-CON-RW-ZA-2000, SDR-2-CON-RW-ZA-2020 → SDR-2-CON-RW-ZA-2000, SDR-2-CON-RW-ZA-2020 FF |
| SDR-2-CON-RW-ZA-2040 | Embankments to the Plot 2 Layer | 2026-11-29 → 2026-07-13 A (-139d) | 2026-12-22 → 2026-10-21 (-62d) | 0% → 25% | 35d → 76.1d | SDR-2-CON-RW-ZA-3110, SDR-2-CON-RW-ZA-3190 FS+1d → SDR-2-CON-RW-ZA-3110, SDR-2-CON-RW-ZA-3190 FF |
| 2 | **Base Course** | 2026-10-10 → 2026-10-21 (+11d) | 2026-10-18 → 2026-10-29 (+11d) |  |  |  |
| SDR-2-CON-RW-ZA-2050 | Aggregate base course layer | 2026-10-10 → 2026-10-21 (+11d) | 2026-10-18 → 2026-10-29 (+11d) |  | 28d → 21d |  |
| 8 | **Demolition Work** | 2026-10-19 → 2026-10-31 (+12d) | 2026-10-20 → 2026-11-01 (+12d) |  |  |  |
| SDR-2-CON-RW-ZA-2060 | Milling of wearing course | 2026-10-19 → 2026-10-31 (+12d) | 2026-10-20 → 2026-11-01 (+12d) |  | 28d → 21d |  |
| 3 | **Asphalt Works** | 2026-11-04 → 2026-11-02 (-2d) | 2026-11-30 → 2026-11-28 (-2d) |  |  |  |
| SDR-2-CON-RW-ZA-2070 | Asphalt works 1st Layer with MC-01 | 2026-11-04 → 2026-11-02 (-2d) | 2026-11-15 → 2026-11-12 (-3d) |  | 16d → 21d |  |
| SDR-2-CON-RW-ZA-2080 | Asphalt works 2nd layer with RC-02 | 2026-11-16 → 2026-11-14 (-2d) | 2026-11-30 → 2026-11-28 (-2d) |  | 16d → 21d |  |
| 4 | **Kerbstone Installation** | 2026-10-10 → 2026-10-21 (+11d) | 2026-12-24 → 2026-12-22 (-2d) |  |  |  |
| SDR-2-CON-RW-ZA-3470 | Kerbstone Installation "all Types" Part 1 | 2026-10-10 → 2026-10-21 (+11d) | 2026-10-29 → 2026-11-10 (+12d) |  | 17d → 10d |  |
| SDR-2-CON-RW-ZA-2090 | Kerbstone Installation "all Types" Part 2 | 2026-12-01 → 2026-11-29 (-2d) | 2026-12-24 → 2026-12-22 (-2d) |  | 16d → 21d |  |
| 5 | **Interlock Installation** | 2026-12-26 → 2026-12-23 (-3d) | 2027-01-18 → 2027-01-16 (-2d) |  |  |  |
| SDR-2-CON-RW-ZA-2100 | Interlock Installation | 2026-12-26 → 2026-12-23 (-3d) | 2027-01-18 → 2027-01-16 (-2d) |  | 16d → 21d |  |
| 6 | **Road Marking** | 2027-01-19 → 2027-01-17 (-2d) | 2027-02-20 → 2027-02-17 (-3d) |  |  |  |
| SDR-2-CON-RW-ZA-2110 | Retroreflective Thermoplastic White Traffic lines | 2027-01-19 → 2027-01-17 (-2d) | 2027-02-03 → 2027-02-01 (-2d) |  | 16d → 21d |  |
| SDR-2-CON-RW-ZA-2120 | Retroreflective Thermoplastic Yellow, Traffic lines | 2027-02-04 → 2027-02-02 (-2d) | 2027-02-20 → 2027-02-17 (-3d) |  | 16d → 21d |  |
| 7 | **Traffic Signage** | 2027-02-21 → 2027-02-18 (-3d) | 2027-03-21 → 2027-03-18 (-3d) |  |  |  |
| SDR-2-CON-RW-ZA-2130 | Single post-Traffic signs Installation | 2027-02-21 → 2027-02-18 (-3d) | 2027-03-21 → 2027-03-18 (-3d) |  | 16d → 21d |  |
| 6 | **ROAD WORKS IN ( PH2-A-MCF0 )** | 2026-06-09 → 2026-04-08 (-62d) | 2027-04-03 → 2027-03-20 (-14d) |  |  |  |
| 1 | **Earth Works Road** | 2026-06-09 → 2026-05-02 (-38d) | 2026-07-01 → 2026-06-21 (-10d) |  |  |  |
| SDR-2-CON-RW-ZA-2140 | Roadway Excavation and cuttings | 2026-06-09 → 2026-05-02 A (-38d) | 2026-07-01 → 2026-06-21 A (-10d) | 0% → 100% | 1d → none | SDR-2-PRO-DES-C-1000, SDR-2-CON-RW-ZA-2000 → SDR-2-PRO-DES-C-1000, SDR-2-CON-RW-ZA-2000 SS+3d |
| 10 | **Backfilling Works** | 2026-07-09 → 2026-04-08 (-92d) | 2026-10-11 → 2026-06-11 (-122d) |  |  |  |
| SDR-2-CON-RW-ZA-3200 | Embankments to the Road 1 Layer | 2026-07-09 → 2026-04-08 A (-92d) | 2026-08-02 → 2026-05-13 A (-81d) | 0% → 100% | 5d → none | SDR-2-CON-RW-ZA-2140 FS+6d → SDR-2-CON-RW-ZA-2140 |
| SDR-2-CON-RW-ZA-3210 | Embankments to the Road 2 Layer | 2026-08-03 → 2026-05-14 A (-81d) | 2026-08-26 → 2026-05-24 A (-94d) | 0% → 100% | 5d → none |  |
| SDR-2-CON-RW-ZA-3220 | Embankments to the Road 3 Layer | 2026-08-27 → 2026-05-24 A (-95d) | 2026-09-17 → 2026-06-06 A (-103d) | 0% → 100% | 5d → none |  |
| SDR-2-CON-RW-ZA-2150 | Embankments to the Road 4 Layer | 2026-09-19 → 2026-06-08 A (-103d) | 2026-10-11 → 2026-06-11 A (-122d) | 0% → 100% | 5d → none |  |
| 11 | **Subgrade** | 2026-10-12 → 2026-09-28 (-14d) | 2026-11-03 → 2026-10-20 (-14d) |  |  |  |
| SDR-2-CON-RW-ZA-2160 | Subgrade layer works | 2026-10-12 → 2026-09-28 (-14d) | 2026-11-03 → 2026-10-20 (-14d) |  | 5d → 20d |  |
| 9 | **Earth Works Plot** | 2026-11-04 → 2026-06-01 (-156d) | 2027-01-16 → 2026-08-12 (-157d) |  |  |  |
| SDR-2-CON-RW-ZA-3230 | Embankments to the Plot 1 Layer | 2026-11-28 → 2026-06-01 A (-180d) | 2026-12-21 → 2026-08-06 A (-137d) | 0% → 100% | 17d → none |  |
| SDR-2-CON-RW-ZA-2170 | Plot Excavation for cuttings (all types of soil) | 2026-11-04 → 2026-07-13 A (-114d) | 2026-11-26 → 2026-08-11 A (-107d) | 0% → 100% | 11d → none | SDR-2-CON-RW-ZA-3460, SDR-2-CON-RW-ZA-2140, SDR-2-CON-RW-ZA-2160 → SDR-2-CON-RW-ZA-2140 |
| SDR-2-CON-RW-ZA-2180 | Embankments to the Plot 2 Layer | 2026-12-23 → 2026-08-03 A (-142d) | 2027-01-16 → 2026-08-12 A (-157d) | 0% → 100% | 17d → none | SDR-2-CON-RW-ZA-1900, SDR-2-CON-RW-ZA-3110, SDR-2-CON-RW-ZA-3230 FS+1d → SDR-2-CON-RW-ZA-3230 FS+1d, SDR-2-CON-RW-ZA-3110, SDR-2-CON-RW-ZA-1900 SS |
| 2 | **Base Course** | 2026-11-04 → 2026-10-21 (-14d) | 2026-11-17 → 2026-11-03 (-14d) |  |  |  |
| SDR-2-CON-RW-ZA-2190 | Aggregate base course layer | 2026-11-04 → 2026-10-21 (-14d) | 2026-11-17 → 2026-11-03 (-14d) |  | 5d → 20d |  |
| 8 | **Demolition Work** | 2026-11-18 → 2026-11-04 (-14d) | 2026-11-19 → 2026-11-05 (-14d) |  |  |  |
| SDR-2-CON-RW-ZA-2200 | Milling of wearing course | 2026-11-18 → 2026-11-04 (-14d) | 2026-11-19 → 2026-11-05 (-14d) |  | 5d → 20d |  |
| 3 | **Asphalt Works** | 2026-11-21 → 2026-11-07 (-14d) | 2026-12-13 → 2026-11-29 (-14d) |  |  |  |
| SDR-2-CON-RW-ZA-2210 | Asphalt works 1st Layer with MC-01 | 2026-11-21 → 2026-11-07 (-14d) | 2026-11-29 → 2026-11-15 (-14d) |  | 5d → 20d |  |
| SDR-2-CON-RW-ZA-2220 | Asphalt works 2nd layer with RC-02 | 2026-11-30 → 2026-11-16 (-14d) | 2026-12-13 → 2026-11-29 (-14d) |  | 5d → 20d |  |
| 4 | **Kerbstone Installation** | 2026-11-04 → 2026-10-21 (-14d) | 2027-01-06 → 2026-12-23 (-14d) |  |  |  |
| SDR-2-CON-RW-ZA-3480 | Kerbstone Installation "all Types" Part 1 | 2026-11-04 → 2026-10-21 (-14d) | 2026-11-24 → 2026-11-10 (-14d) |  | 5d → 20d |  |
| SDR-2-CON-RW-ZA-2230 | Kerbstone Installation "all Types" Part 2 | 2026-12-14 → 2026-11-30 (-14d) | 2027-01-06 → 2026-12-23 (-14d) |  | 5d → 20d |  |
| 5 | **Interlock Installation** | 2027-01-07 → 2026-12-24 (-14d) | 2027-01-31 → 2027-01-17 (-14d) |  |  |  |
| SDR-2-CON-RW-ZA-2240 | Interlock Installation | 2027-01-07 → 2026-12-24 (-14d) | 2027-01-31 → 2027-01-17 (-14d) |  | 5d → 20d |  |
| 6 | **Road Marking** | 2027-02-01 → 2027-01-18 (-14d) | 2027-03-06 → 2027-02-18 (-16d) |  |  |  |
| SDR-2-CON-RW-ZA-2250 | Retroreflective Thermoplastic White Traffic lines | 2027-02-01 → 2027-01-18 (-14d) | 2027-02-16 → 2027-02-02 (-14d) |  | 5d → 20d |  |
| SDR-2-CON-RW-ZA-2260 | Retroreflective Thermoplastic Yellow, Traffic lines | 2027-02-17 → 2027-02-03 (-14d) | 2027-03-06 → 2027-02-18 (-16d) |  | 5d → 20d |  |
| 7 | **Traffic Signage** | 2027-03-07 → 2027-02-20 (-15d) | 2027-04-03 → 2027-03-20 (-14d) |  |  |  |
| SDR-2-CON-RW-ZA-2270 | Single post-Traffic signs Installation | 2027-03-07 → 2027-02-20 (-15d) | 2027-04-03 → 2027-03-20 (-14d) |  | 5d → 20d |  |
| 9 | **ROAD WORKS IN ( PH2-A-MCG0 )** | 2026-06-14 → 2026-04-22 (-53d) | 2027-04-17 → 2027-02-28 (-48d) |  |  |  |
| 1 | **Earth Works Road** | 2026-06-14 → 2026-05-02 (-43d) | 2026-07-06 → 2026-05-24 (-43d) |  |  |  |
| SDR-2-CON-RW-ZA-2280 | Roadway Excavation and cuttings | 2026-06-14 → 2026-05-02 A (-43d) | 2026-07-06 → 2026-05-24 A (-43d) | 0% → 100% | 1d → none | SDR-2-CON-RW-ZA-2140 SS+4d → SDR-2-CON-RW-ZA-2140 SS |
| 10 | **Backfilling Works** | 2026-07-08 → 2026-04-22 (-77d) | 2026-10-14 → 2026-06-15 (-121d) |  |  |  |
| SDR-2-CON-RW-ZA-3240 | Embankments to the Road 1 Layer | 2026-07-08 → 2026-04-22 A (-77d) | 2026-08-01 → 2026-05-13 A (-80d) | 0% → 100% | 1d → none | SDR-2-CON-RW-ZA-2280 FS+1d → SDR-2-CON-RW-ZA-2280 |
| SDR-2-CON-RW-ZA-3250 | Embankments to the Road 2 Layer | 2026-08-02 → 2026-05-13 A (-81d) | 2026-08-25 → 2026-05-25 A (-92d) | 0% → 100% | 1d → none |  |
| SDR-2-CON-RW-ZA-2290 | Embankments to the Road 4 Layer | 2026-09-20 → 2026-05-24 A (-119d) | 2026-10-14 → 2026-06-08 A (-128d) | 0% → 100% | 1d → none |  |
| SDR-2-CON-RW-ZA-3260 | Embankments to the Road 3 Layer | 2026-08-26 → 2026-05-24 A (-94d) | 2026-09-19 → 2026-06-15 A (-96d) | 0% → 100% | 1d → none |  |
| 11 | **Subgrade** | 2026-10-15 → 2026-09-28 (-17d) | 2026-11-04 → 2026-10-18 (-17d) |  |  |  |
| SDR-2-CON-RW-ZA-2300 | Subgrade layer works | 2026-10-15 → 2026-09-28 (-17d) | 2026-11-04 → 2026-10-18 (-17d) |  | 1d → 32d |  |
| 9 | **Earth Works Plot** | 2026-11-05 → 2026-06-01 (-157d) | 2027-01-17 → 2026-10-20 (-89d) |  |  |  |
| SDR-2-CON-RW-ZA-3270 | Embankments to the Plot 1 Layer | 2026-11-30 → 2026-06-01 A (-182d) | 2026-12-23 → 2026-06-23 A (-183d) | 0% → 100% | 8d → none | SDR-2-CON-RW-ZA-2310 → SDR-2-CON-RW-ZA-2310 SS |
| SDR-2-CON-RW-ZA-2310 | Plot Excavation for cuttings (all types of soil) | 2026-11-05 → 2026-07-13 A (-115d) | 2026-11-29 → 2026-10-18 (-42d) | 0% → 55% | 8d → 65d | SDR-2-CON-RW-ZA-2280, SDR-2-CON-RW-ZA-2300 → SDR-2-CON-RW-ZA-2280, SDR-2-CON-RW-ZA-2300 FF |
| SDR-2-CON-RW-ZA-2320 | Embankments to the Plot 2 Layer | 2026-12-24 → 2026-07-27 A (-150d) | 2027-01-17 → 2026-10-20 (-89d) | 0% → 65% | 19d → 132d | SDR-2-CON-RW-ZA-3270 FF, SDR-2-CON-RW-ZA-3230, SDR-2-CON-RW-ZA-3190, SDR-2-CON-RW-ZA-3270 → SDR-2-CON-RW-ZA-3270, SDR-2-CON-RW-ZA-3270 FF, SDR-2-CON-RW-ZA-3230, SDR-2-CON-RW-ZA-3190 FF |
| 2 | **Base Course** | 2026-11-05 → 2026-10-19 (-17d) | 2026-11-12 → 2026-10-26 (-17d) |  |  |  |

| ID | Task | Start | Finish | Complete | Total float | Predecessors |
| --- | --- | --- | --- | --- | --- | --- |
| SDR-2-CON-RW-ZA-2330 | Aggregate base course layer | 2026-11-05 → 2026-10-19 (-17d) | 2026-11-12 → 2026-10-26 (-17d) |  | 1d → 38d |  |
| 8 | **Demolition Work** | 2026-11-14 → 2026-10-27 (-18d) | 2026-11-15 → 2026-10-28 (-18d) |  |  |  |
| SDR-2-CON-RW-ZA-2340 | Milling of wearing course | 2026-11-14 → 2026-10-27 (-18d) | 2026-11-15 → 2026-10-28 (-18d) |  | 1d → 38d |  |
| 3 | **Asphalt Works** | 2026-11-16 → 2026-10-29 (-18d) | 2026-12-12 → 2026-11-14 (-28d) |  |  |  |
| SDR-2-CON-RW-ZA-2350 | Asphalt works 1st Layer with MC-01 | 2026-11-16 → 2026-10-29 (-18d) | 2026-11-18 → 2026-11-01 (-17d) |  | 1d → 38d |  |
| SDR-2-CON-RW-ZA-2360 | Asphalt works 2nd layer with RC-02 | 2026-11-30 → 2026-11-02 (-28d) | 2026-12-12 → 2026-11-14 (-28d) |  | 29d → 53d |  |
| 4 | **Kerbstone Installation** | 2026-11-05 → 2026-10-19 (-17d) | 2027-01-05 → 2026-12-08 (-28d) |  |  |  |
| SDR-2-CON-RW-ZA-3490 | Kerbstone Installation "all Types" Part 1 | 2026-11-05 → 2026-10-19 (-17d) | 2026-11-25 → 2026-11-08 (-17d) |  | 10d → 32d |  |
| SDR-2-CON-RW-ZA-2370 | Kerbstone Installation "all Types" Part 2 | 2026-12-13 → 2026-11-15 (-28d) | 2027-01-05 → 2026-12-08 (-28d) |  | 29d → 53d |  |
| 5 | **Interlock Installation** | 2027-01-21 → 2026-12-09 (-43d) | 2027-02-14 → 2027-01-02 (-43d) |  |  |  |
| SDR-2-CON-RW-ZA-2380 | Interlock Installation | 2027-01-21 → 2026-12-09 (-43d) | 2027-02-14 → 2027-01-02 (-43d) |  | 17d → 54d |  |
| 6 | **Road Marking** | 2027-02-15 → 2027-01-03 (-43d) | 2027-03-24 → 2027-02-03 (-49d) |  |  |  |
| SDR-2-CON-RW-ZA-2390 | Retroreflective Thermoplastic White Traffic lines | 2027-02-15 → 2027-01-03 (-43d) | 2027-03-03 → 2027-01-18 (-44d) |  | 17d → 54d |  |
| SDR-2-CON-RW-ZA-2400 | Retroreflective Thermoplastic Yellow, Traffic lines | 2027-03-04 → 2027-01-19 (-44d) | 2027-03-24 → 2027-02-03 (-49d) |  | 17d → 54d |  |
| 7 | **Traffic Signage** | 2027-03-25 → 2027-02-04 (-49d) | 2027-04-17 → 2027-02-28 (-48d) |  |  |  |
| SDR-2-CON-RW-ZA-2410 | Single post-Traffic signs Installation | 2027-03-25 → 2027-02-04 (-49d) | 2027-04-17 → 2027-02-28 (-48d) |  | 17d → 54d |  |
| 10 | **ROAD WORKS IN ( PH2-A-MCH0 )** | 2026-06-16 → 2026-04-22 (-55d) | 2027-04-06 → 2027-03-14 (-23d) |  |  |  |
| 1 | **Earth Works Road** | 2026-06-16 → 2026-04-22 (-55d) | 2026-07-09 → 2026-05-02 (-68d) |  |  |  |
| SDR-2-CON-RW-ZA-2420 | Roadway Excavation and cuttings | 2026-06-16 → 2026-04-22 A (-55d) | 2026-07-09 → 2026-05-02 A (-68d) | 0% → 100% | 1d → none | SDR-2-CON-RW-ZA-2280 SS+2d → SDR-2-CON-RW-ZA-2280 SS |
| 10 | **Backfilling Works** | 2026-07-14 → 2026-04-25 (-80d) | 2026-10-20 → 2026-06-15 (-127d) |  |  |  |
| SDR-2-CON-RW-ZA-3280 | Embankments to the Road 1 Layer | 2026-07-14 → 2026-04-25 A (-80d) | 2026-08-06 → 2026-05-07 A (-91d) | 0% → 100% | 1d → none | SDR-2-CON-RW-ZA-2420 FS+3d → SDR-2-CON-RW-ZA-2420 |
| SDR-2-CON-RW-ZA-3290 | Embankments to the Road 2 Layer | 2026-08-08 → 2026-05-09 A (-91d) | 2026-08-31 → 2026-05-18 A (-105d) | 0% → 100% | 1d → none |  |
| SDR-2-CON-RW-ZA-3300 | Embankments to the Road 3 Layer | 2026-09-01 → 2026-05-18 A (-106d) | 2026-09-26 → 2026-05-31 A (-118d) | 0% → 100% | 1d → none |  |
| SDR-2-CON-RW-ZA-2430 | Embankments to the Road 4 Layer | 2026-09-27 → 2026-06-01 A (-118d) | 2026-10-20 → 2026-06-15 A (-127d) | 0% → 100% | 1d → none |  |
| 11 | **Subgrade** | 2026-10-21 → 2026-09-28 (-23d) | 2026-10-29 → 2026-10-06 (-23d) |  |  |  |
| SDR-2-CON-RW-ZA-2440 | Subgrade layer works | 2026-10-21 → 2026-09-28 (-23d) | 2026-10-29 → 2026-10-06 (-23d) |  | 1d → 19d |  |
| 9 | **Earth Works Plot** | 2026-10-31 → 2026-06-01 (-152d) | 2027-01-11 → 2026-10-22 (-81d) |  |  |  |
| SDR-2-CON-RW-ZA-2450 | Plot Excavation for cuttings (all types of soil) | 2026-10-31 → 2026-06-01 A (-152d) | 2026-11-23 → 2026-06-08 A (-168d) | 0% → 100% | 1d → none | SDR-2-CON-RW-ZA-2420, SDR-2-CON-RW-ZA-2440 → SDR-2-CON-RW-ZA-2420 |
| SDR-2-CON-RW-ZA-3310 | Embankments to the Plot 1 Layer | 2026-11-24 → 2026-06-01 A (-176d) | 2026-12-17 → 2026-09-28 (-80d) | 0% → 80% | 1d → 62d |  |
| SDR-2-CON-RW-ZA-2460 | Embankments to the Plot 2 Layer | 2026-12-19 → 2026-09-29 (-81d) | 2027-01-11 → 2026-10-22 (-81d) |  | 1d → 62d |  |
| 2 | **Base Course** | 2026-10-31 → 2026-10-07 (-24d) | 2026-11-16 → 2026-10-24 (-23d) |  |  |  |
| SDR-2-CON-RW-ZA-2470 | Aggregate base course layer | 2026-10-31 → 2026-10-07 (-24d) | 2026-11-16 → 2026-10-24 (-23d) |  | 8d → 20d |  |
| 8 | **Demolition Work** | 2026-11-17 → 2026-10-25 (-23d) | 2026-11-18 → 2026-10-26 (-23d) |  |  |  |
| SDR-2-CON-RW-ZA-2480 | Milling of wearing course | 2026-11-17 → 2026-10-25 (-23d) | 2026-11-18 → 2026-10-26 (-23d) |  | 8d → 20d |  |
| 3 | **Asphalt Works** | 2026-11-21 → 2026-10-28 (-24d) | 2026-12-16 → 2026-11-23 (-23d) |  |  |  |
| SDR-2-CON-RW-ZA-2490 | Asphalt works 1st Layer with MC-01 | 2026-11-21 → 2026-10-28 (-24d) | 2026-12-03 → 2026-11-10 (-23d) |  | 11d → 19d |  |
| SDR-2-CON-RW-ZA-2500 | Asphalt works 2nd layer with RC-02 | 2026-12-05 → 2026-11-11 (-24d) | 2026-12-16 → 2026-11-23 (-23d) |  | 11d → 19d |  |
| 4 | **Kerbstone Installation** | 2026-10-31 → 2026-10-07 (-24d) | 2027-01-10 → 2026-12-17 (-24d) |  |  |  |
| SDR-2-CON-RW-ZA-3500 | Kerbstone Installation "all Types" Part 1 | 2026-10-31 → 2026-10-07 (-24d) | 2026-11-19 → 2026-10-27 (-23d) |  | 11d → 19d |  |
| SDR-2-CON-RW-ZA-2510 | Kerbstone Installation "all Types" Part 2 | 2026-12-17 → 2026-11-24 (-23d) | 2027-01-10 → 2026-12-17 (-24d) |  | 11d → 19d |  |
| 5 | **Interlock Installation** | 2027-01-11 → 2026-12-19 (-23d) | 2027-02-03 → 2027-01-11 (-23d) |  |  |  |
| SDR-2-CON-RW-ZA-2520 | Interlock Installation | 2027-01-11 → 2026-12-19 (-23d) | 2027-02-03 → 2027-01-11 (-23d) |  | 19d → 27d |  |
| 6 | **Road Marking** | 2027-02-04 → 2027-01-12 (-23d) | 2027-03-14 → 2027-02-13 (-29d) |  |  |  |
| SDR-2-CON-RW-ZA-2530 | Retroreflective Thermoplastic White Traffic lines | 2027-02-04 → 2027-01-12 (-23d) | 2027-02-20 → 2027-01-27 (-24d) |  | 19d → 27d |  |
| SDR-2-CON-RW-ZA-2540 | Retroreflective Thermoplastic Yellow, Traffic lines | 2027-02-21 → 2027-01-28 (-24d) | 2027-03-14 → 2027-02-13 (-29d) |  | 19d → 27d |  |
| 7 | **Traffic Signage** | 2027-03-15 → 2027-02-14 (-29d) | 2027-04-06 → 2027-03-14 (-23d) |  |  |  |
| SDR-2-CON-RW-ZA-2550 | Single post-Traffic signs Installation | 2027-03-15 → 2027-02-14 (-29d) | 2027-04-06 → 2027-03-14 (-23d) |  | 19d → 27d |  |
| 11 | **ROAD WORKS IN ( PH2-ART-MC00 )** | 2026-06-18 → 2026-04-28 (-51d) | 2027-04-07 → 2027-02-09 (-57d) |  |  |  |
| 1 | **Earth Works Road** | 2026-06-18 → 2026-04-28 (-51d) | 2026-07-12 → 2026-07-20 (+8d) |  |  |  |
| SDR-2-CON-RW-ZA-2560 | Roadway Excavation and cuttings | 2026-06-18 → 2026-04-28 A (-51d) | 2026-07-12 → 2026-07-20 A (+8d) | 0% → 100% | 1d → none | SDR-2-CON-RW-ZA-2420 SS+2d → SDR-2-CON-RW-ZA-2420 SS |
| 10 | **Backfilling Works** | 2026-07-15 → 2026-06-01 (-44d) | 2026-10-21 → 2026-06-28 (-115d) |  |  |  |
| SDR-2-CON-RW-ZA-3320 | Embankments to the Road 1 Layer | 2026-07-15 → 2026-06-01 A (-44d) | 2026-08-08 → 2026-06-08 A (-61d) | 0% → 100% | 1d → none | SDR-2-CON-RW-ZA-2560 FS+2d → SDR-2-CON-RW-ZA-2560 |
| SDR-2-CON-RW-ZA-3330 | Embankments to the Road 2 Layer | 2026-08-09 → 2026-06-08 A (-62d) | 2026-09-01 → 2026-06-15 A (-78d) | 0% → 100% | 1d → none |  |
| SDR-2-CON-RW-ZA-3340 | Embankments to the Road 3 Layer | 2026-09-02 → 2026-06-15 A (-79d) | 2026-09-27 → 2026-06-22 A (-97d) | 0% → 100% | 1d → none |  |
| SDR-2-CON-RW-ZA-2570 | Embankments to the Road 4 Layer | 2026-09-28 → 2026-06-22 A (-98d) | 2026-10-21 → 2026-06-28 A (-115d) | 0% → 100% | 1d → none |  |
| 11 | **Subgrade** | 2026-10-22 → 2026-08-11 (-72d) | 2026-11-05 → 2026-09-17 (-49d) |  |  |  |
| SDR-2-CON-RW-ZA-2580 | Subgrade layer works | 2026-10-22 → 2026-08-11 A (-72d) | 2026-11-05 → 2026-09-17 A (-49d) | 0% → 100% | 1d → none |  |
| 9 | **Earth Works Plot** | 2026-11-07 → 2026-06-07 (-153d) | 2027-01-18 → 2026-06-25 (-207d) |  |  |  |
| SDR-2-CON-RW-ZA-3350 | Embankments to the Plot 1 Layer | 2026-12-01 → 2026-06-07 A (-177d) | 2026-12-24 → 2026-06-16 A (-191d) | 0% → 100% | 11d → none |  |
| SDR-2-CON-RW-ZA-2590 | Plot Excavation for cuttings (all types of soil) | 2026-11-07 → 2026-06-08 A (-152d) | 2026-11-30 → 2026-06-15 A (-168d) | 0% → 100% | 7d → none |  |
| SDR-2-CON-RW-ZA-2600 | Embankments to the Plot 2 Layer | 2026-12-26 → 2026-06-15 A (-194d) | 2027-01-18 → 2026-06-25 A (-207d) | 0% → 100% | 11d → none |  |
| 2 | **Base Course** | 2026-11-07 → 2026-08-31 (-68d) | 2026-11-18 → 2026-09-28 (-51d) |  |  |  |
| SDR-2-CON-RW-ZA-2610 | Aggregate base course layer | 2026-11-07 → 2026-08-31 A (-68d) | 2026-11-18 → 2026-09-28 (-51d) | 0% → 86% | 1d → 37d |  |
| 8 | **Demolition Work** | 2026-11-19 → 2026-09-29 (-51d) | 2026-11-21 → 2026-09-30 (-52d) |  |  |  |
| SDR-2-CON-RW-ZA-2620 | Milling of wearing course | 2026-11-19 → 2026-09-29 (-51d) | 2026-11-21 → 2026-09-30 (-52d) |  | 1d → 37d |  |
| 3 | **Asphalt Works** | 2026-11-22 → 2026-10-01 (-52d) | 2026-12-17 → 2026-10-27 (-51d) |  |  |  |
| SDR-2-CON-RW-ZA-2630 | Asphalt works 1st Layer with MC-01 | 2026-11-22 → 2026-10-01 (-52d) | 2026-12-05 → 2026-10-14 (-52d) |  | 1d → 37d |  |
| SDR-2-CON-RW-ZA-2640 | Asphalt works 2nd layer with RC-02 | 2026-12-06 → 2026-10-15 (-52d) | 2026-12-17 → 2026-10-27 (-51d) |  | 1d → 37d |  |
| 4 | **Kerbstone Installation** | 2026-11-07 → 2026-09-28 (-40d) | 2027-01-11 → 2026-11-21 (-51d) |  |  |  |
| SDR-2-CON-RW-ZA-3510 | Kerbstone Installation "all Types" Part 1 | 2026-11-07 → 2026-09-28 (-40d) | 2026-11-26 → 2026-10-18 (-39d) |  | 8d → 45d |  |

| ID | Task | Start | Finish | Complete | Total float | Predecessors |
| --- | --- | --- | --- | --- | --- | --- |
| SDR-2-CON-RW-ZA-2650 | Kerbstone Installation "all Types" Part 2 | 2026-12-19 → 2026-10-28 (-52d) | 2027-01-11 → 2026-11-21 (-51d) |  | 1d → 37d | SDR-2-CON-RW-ZA-3310, SDR-2-CON-RW-ZA-2640 → SDR-2-CON-RW-ZA-3310, SDR-2-CON-RW-ZA-2640, SDR-2-CON-RW-ZA-3510 |
| 5 | **Interlock Installation** | 2027-01-12 → 2026-11-22 (-51d) | 2027-02-04 → 2026-12-15 (-51d) |  |  |  |
| SDR-2-CON-RW-ZA-2660 | Interlock Installation | 2027-01-12 → 2026-11-22 (-51d) | 2027-02-04 → 2026-12-15 (-51d) |  | 1d → 37d |  |
| 6 | **Road Marking** | 2027-02-06 → 2026-12-16 (-52d) | 2027-03-20 → 2027-01-21 (-58d) |  |  |  |
| SDR-2-CON-RW-ZA-2670 | Retroreflective Thermoplastic White Traffic lines | 2027-02-06 → 2026-12-16 (-52d) | 2027-02-25 → 2027-01-04 (-52d) |  | 1d → 37d |  |
| SDR-2-CON-RW-ZA-2680 | Retroreflective Thermoplastic Yellow, Traffic lines | 2027-02-27 → 2027-01-05 (-53d) | 2027-03-20 → 2027-01-21 (-58d) |  | 1d → 37d |  |
| 7 | **Traffic Signage** | 2027-03-21 → 2027-01-23 (-57d) | 2027-04-07 → 2027-02-09 (-57d) |  |  |  |
| SDR-2-CON-RW-ZA-2690 | Single post-Traffic signs Installation | 2027-03-21 → 2027-01-23 (-57d) | 2027-04-07 → 2027-02-09 (-57d) |  | 1d → 37d |  |
| 12 | **ROAD WORKS IN ( PH2-ART-MC10 )** | 2026-06-21 → 2026-04-22 (-60d) | 2027-04-13 → 2027-03-15 (-29d) |  |  |  |
| 1 | **Earth Works Road** | 2026-06-21 → 2026-04-22 (-60d) | 2026-07-13 → 2026-05-13 (-61d) |  |  |  |
| SDR-2-CON-RW-ZA-2700 | Roadway Excavation and cuttings | 2026-06-21 → 2026-04-22 A (-60d) | 2026-07-13 → 2026-05-13 A (-61d) | 0% → 100% | 2d → none | SDR-2-CON-RW-ZA-2560 SS+2d → SDR-2-CON-RW-ZA-2560 SS |
| 10 | **Backfilling Works** | 2026-07-19 → 2026-05-02 (-78d) | 2026-10-26 → 2026-06-21 (-127d) |  |  |  |
| SDR-2-CON-RW-ZA-3360 | Embankments to the Road 1 Layer | 2026-07-19 → 2026-05-02 A (-78d) | 2026-08-11 → 2026-05-13 A (-90d) | 0% → 100% | 2d → none | SDR-2-CON-RW-ZA-2700 FS+4d → SDR-2-CON-RW-ZA-2700 |
| SDR-2-CON-RW-ZA-3370 | Embankments to the Road 2 Layer | 2026-08-12 → 2026-05-07 A (-97d) | 2026-09-05 → 2026-05-18 A (-110d) | 0% → 100% | 2d → none |  |
| SDR-2-CON-RW-ZA-3380 | Embankments to the Road 3 Layer | 2026-09-06 → 2026-05-16 A (-113d) | 2026-09-30 → 2026-05-24 A (-129d) | 0% → 100% | 2d → none |  |
| SDR-2-CON-RW-ZA-2710 | Embankments to the Road 4 Layer | 2026-10-03 → 2026-06-11 A (-114d) | 2026-10-26 → 2026-06-21 A (-127d) | 0% → 100% | 2d → none |  |
| 11 | **Subgrade** | 2026-10-27 → 2026-09-24 (-33d) | 2026-11-09 → 2026-10-11 (-29d) |  |  |  |
| SDR-2-CON-RW-ZA-2720 | Subgrade layer works | 2026-10-27 → 2026-09-24 A (-33d) | 2026-11-09 → 2026-10-11 (-29d) | 0% → 25% | 2d → 46d |  |
| 9 | **Earth Works Plot** | 2026-11-10 → 2026-06-09 (-154d) | 2027-01-21 → 2026-06-29 (-206d) |  |  |  |
| SDR-2-CON-RW-ZA-2730 | Plot Excavation for cuttings (all types of soil) | 2026-11-10 → 2026-06-09 A (-154d) | 2026-12-03 → 2026-06-18 A (-168d) | 0% → 100% | 4d → none | SDR-2-CON-RW-ZA-2700, SDR-2-CON-RW-ZA-2720 → SDR-2-CON-RW-ZA-2700 |
| SDR-2-CON-RW-ZA-3390 | Embankments to the Plot 1 Layer | 2026-12-05 → 2026-06-15 A (-173d) | 2026-12-28 → 2026-06-23 A (-188d) | 0% → 100% | 4d → none | SDR-2-CON-RW-ZA-3510 FS+2d, SDR-2-CON-RW-ZA-2590, SDR-2-CON-RW-ZA-2730 → SDR-2-CON-RW-ZA-2730, SDR-2-CON-RW-ZA-2590 |
| SDR-2-CON-RW-ZA-2740 | Embankments to the Plot 2 Layer | 2026-12-29 → 2026-06-18 A (-194d) | 2027-01-21 → 2026-06-29 A (-206d) | 0% → 100% | 9d → none |  |
| 2 | **Base Course** | 2026-11-10 → 2026-10-12 (-29d) | 2026-11-22 → 2026-10-24 (-29d) |  |  |  |
| SDR-2-CON-RW-ZA-2750 | Aggregate base course layer | 2026-11-10 → 2026-10-12 (-29d) | 2026-11-22 → 2026-10-24 (-29d) |  | 10d → 46d |  |
| 8 | **Demolition Work** | 2026-11-23 → 2026-10-25 (-29d) | 2026-11-24 → 2026-10-26 (-29d) |  |  |  |
| SDR-2-CON-RW-ZA-2760 | Milling of wearing course | 2026-11-23 → 2026-10-25 (-29d) | 2026-11-24 → 2026-10-26 (-29d) |  | 10d → 46d |  |
| 3 | **Asphalt Works** | 2026-11-25 → 2026-10-27 (-29d) | 2027-01-16 → 2026-12-17 (-30d) |  |  |  |
| SDR-2-CON-RW-ZA-2770 | Asphalt works 1st Layer with MC-01 | 2026-11-25 → 2026-10-27 (-29d) | 2026-12-06 → 2026-11-07 (-29d) |  | 10d → 46d |  |
| SDR-2-CON-RW-ZA-2780 | Asphalt works 2nd layer with RC-02 | 2026-12-07 → 2026-11-08 (-29d) | 2026-12-22 → 2026-11-23 (-29d) |  | 10d → 46d |  |
| SDR-2-CON-RW-ZA-2850 | Asphalt Works 3 rd Layer with RC-02 | 2026-12-23 → 2026-11-24 (-29d) | 2027-01-16 → 2026-12-17 (-30d) |  | 10d → 46d |  |
| 4 | **Kerbstone Installation** | 2026-11-10 → 2026-10-12 (-29d) | 2027-02-09 → 2027-01-11 (-29d) |  |  |  |
| SDR-2-CON-RW-ZA-3520 | Kerbstone Installation "all Types" Part 1 | 2026-11-10 → 2026-10-12 (-29d) | 2026-11-30 → 2026-11-01 (-29d) |  | 2d → 69d |  |
| SDR-2-CON-RW-ZA-2790 | Kerbstone Installation "all Types" Part 2 | 2027-01-17 → 2026-12-19 (-29d) | 2027-02-09 → 2027-01-11 (-29d) |  | 20d → 46d |  |
| 5 | **Interlock Installation** | 2027-02-10 → 2027-01-12 (-29d) | 2027-03-07 → 2027-02-04 (-31d) |  |  |  |
| SDR-2-CON-RW-ZA-2800 | Interlock Installation | 2027-02-10 → 2027-01-12 (-29d) | 2027-03-07 → 2027-02-04 (-31d) |  | 20d → 46d |  |
| 6 | **Road Marking** | 2027-03-08 → 2027-02-06 (-30d) | 2027-03-30 → 2027-02-24 (-34d) |  |  |  |
| SDR-2-CON-RW-ZA-2810 | Retroreflective Thermoplastic White Traffic lines | 2027-03-08 → 2027-02-06 (-30d) | 2027-03-21 → 2027-02-14 (-35d) |  | 20d → 46d |  |
| SDR-2-CON-RW-ZA-2820 | Retroreflective Thermoplastic Yellow, Traffic lines | 2027-03-22 → 2027-02-15 (-35d) | 2027-03-30 → 2027-02-24 (-34d) |  | 20d → 46d |  |
| 7 | **Traffic Signage** | 2027-03-31 → 2027-02-25 (-34d) | 2027-04-13 → 2027-03-15 (-29d) |  |  |  |
| SDR-2-CON-RW-ZA-2830 | Single post-Traffic signs Installation | 2027-03-31 → 2027-02-25 (-34d) | 2027-04-13 → 2027-03-15 (-29d) |  | 20d → 46d |  |
| ZG | **ZONE G** | 2026-02-07 → 2026-02-06 (-1d) | 2027-04-14 → 2027-04-13 (-1d) |  |  |  |
| 14 | **GENERAL WORKS** | 2026-02-07 → 2026-02-06 (-1d) |  |  |  |  |
| 10 | **Cleaning and removal of organic materials in Zone A** | 2026-02-07 → 2026-02-06 (-1d) | 2026-02-25 → 2026-03-06 (+9d) |  |  |  |
| SDR-2-CON-RW-ZG-1000 | Cleaning and removal of organic materials in Zone G | 2026-02-07 → 2026-02-06 A (-1d) | 2026-02-25 → 2026-03-06 A (+9d) | 0% → 100% | 12d → none |  |
| 12 | **Surveying works Zone A** | 2026-02-26 → 2026-03-06 (+8d) |  |  |  |  |
| SDR-2-CON-RW-ZG-1010 | Surveying works Zone G | 2026-02-26 → 2026-03-06 A (+8d) | 2026-03-16 A | 0% → 100% | 12d → none |  |
| 5 | **ROAD WORKS IN ( PH2-COL-MC50 )** | 2026-03-17 → 2026-03-28 (+11d) | 2027-04-14 → 2027-03-28 (-17d) |  |  |  |
| 1 | **Earth Works Road** | 2026-03-17 → 2026-04-04 (+18d) | 2026-04-14 → 2026-04-27 (+13d) |  |  |  |
| SDR-2-CON-RW-ZG-1020 | Roadway Excavation and cuttings | 2026-03-17 → 2026-04-04 A (+18d) | 2026-04-14 → 2026-04-27 A (+13d) | 0% → 100% | 12d → none |  |
| 10 | **Backfilling Works** | 2026-04-15 → 2026-03-28 (-18d) | 2026-08-02 → 2026-07-15 (-18d) |  |  |  |
| SDR-2-CON-RW-ZG-2220 | Embankments to the Road 1 Layer | 2026-04-15 → 2026-03-28 A (-18d) | 2026-05-09 → 2026-05-21 A (+12d) | 0% → 100% | 12d → none |  |
| SDR-2-CON-RW-ZG-2230 | Embankments to the Road 2 Layer | 2026-05-10 → 2026-05-23 A (+13d) | 2026-06-07 → 2026-06-03 A (-4d) | 0% → 100% | 12d → none |  |
| SDR-2-CON-RW-ZG-2240 | Embankments to the Road 3 Layer | 2026-06-08 → 2026-06-04 A (-4d) | 2026-07-01 A | 0% → 100% | 12d → none |  |
| SDR-2-CON-RW-ZG-1030 | Embankments to the Road 4 Layer | 2026-07-09 → 2026-07-02 A (-7d) | 2026-08-02 → 2026-07-15 A (-18d) | 0% → 100% | 12d → none |  |
| 11 | **Subgrade** | 2026-08-03 → 2026-07-16 (-18d) | 2026-08-26 → 2026-09-28 (+33d) |  |  |  |
| SDR-2-CON-RW-ZG-1040 | Subgrade layer works | 2026-08-03 → 2026-07-16 A (-18d) | 2026-08-26 → 2026-09-28 (+33d) | 0% → 80% | 12d → 8d |  |
| 9 | **Earth Works Plot** | 2026-08-27 → 2026-06-23 (-65d) | 2027-01-18 → 2026-11-01 (-78d) |  |  |  |
| SDR-2-CON-RW-ZG-1050 | Plot Excavation for cuttings (all types of soil) | 2026-08-27 → 2026-06-23 A (-65d) | 2026-09-20 → 2026-09-28 (+8d) | 0% → 80% | 26d → 68d | SDR-2-CON-RW-ZG-1020, SDR-2-CON-RW-ZG-1040 → SDR-2-CON-RW-ZG-1020, SDR-2-CON-RW-ZG-1040 FF |
| SDR-2-CON-RW-ZG-2250 | Embankments to the Plot 1 Layer | 2026-09-21 → 2026-07-21 A (-62d) | 2026-10-15 → 2026-08-03 A (-73d) | 0% → 100% | 27d → none | SDR-2-CON-RW-ZG-1050 → SDR-2-CON-RW-ZG-1050 SS |
| SDR-2-CON-RW-ZG-2260 | Embankments to the Plot 2 Layer | 2026-12-01 → 2026-07-21 A (-133d) | 2026-12-24 → 2026-11-01 (-53d) | 0% → 90% | 2d → 69d | SDR-2-CON-RW-ZA-3520, SDR-2-CON-RW-ZG-2250 → SDR-2-CON-RW-ZG-2250, SDR-2-CON-RW-ZA-3520 FF |
| SDR-2-CON-RW-ZG-1060 | Embankments to the Plot 3 Layer | 2026-12-26 → 2026-08-01 A (-147d) | 2027-01-18 → 2026-11-01 (-78d) | 0% → 60% | 2d → 69d | SDR-2-CON-RW-ZG-2260 → SDR-2-CON-RW-ZG-2260 FF |
| 2 | **Base Course** | 2026-08-27 → 2026-08-20 (-7d) | 2026-09-20 → 2026-09-28 (+8d) |  |  |  |
| SDR-2-CON-RW-ZG-1070 | Aggregate base course layer | 2026-08-27 → 2026-08-20 A (-7d) | 2026-09-20 → 2026-09-28 (+8d) | 0% → 50% | 12d → 8d | SDR-2-CON-RW-ZG-1040 → SDR-2-CON-RW-ZG-1040 FF |
| 8 | **Demolition Work** | 2026-09-21 → 2026-09-29 (+8d) | 2026-10-14 → 2026-10-21 (+7d) |  |  |  |
| SDR-2-CON-RW-ZG-1080 | Removal of curbstone | 2026-09-21 → 2026-09-29 (+8d) | 2026-10-04 → 2026-10-11 (+7d) |  | 12d → 8d |  |
| SDR-2-CON-RW-ZG-1090 | Milling of wearing course | 2026-10-05 → 2026-10-12 (+7d) | 2026-10-14 → 2026-10-21 (+7d) |  | 12d → 8d |  |
| 3 | **Asphalt Works** | 2026-10-15 → 2026-10-22 (+7d) | 2026-11-30 → 2026-12-07 (+7d) |  |  |  |
| SDR-2-CON-RW-ZG-1100 | Asphalt works 1st Layer with MC-01 | 2026-10-15 → 2026-10-22 (+7d) | 2026-11-05 → 2026-11-12 (+7d) |  | 12d → 8d |  |
| SDR-2-CON-RW-ZG-1110 | Asphalt works 2nd layer with RC-02 | 2026-11-07 → 2026-11-14 (+7d) | 2026-11-30 → 2026-12-07 (+7d) |  | 12d → 8d |  |
| 4 | **Kerbstone Installation** | 2026-09-21 → 2026-09-29 (+8d) | 2027-01-18 → 2026-12-31 (-18d) |  |  |  |

| ID | Task | Start | Finish | Complete | Total float | Predecessors |
| --- | --- | --- | --- | --- | --- | --- |
| SDR-2-CON-RW-ZG-2550 | Kerbstone Installation "all Types" Part 1 | 2026-09-21 → 2026-09-29 (+8d) | 2026-10-12 → 2026-10-19 (+7d) |  | 14d → 10d |  |
| SDR-2-CON-RW-ZG-1120 | Kerbstone Installation "all Types" Part 2 | 2026-12-26 → 2026-12-08 (-18d) | 2027-01-18 → 2026-12-31 (-18d) |  |  |  |
| 5 | **Interlock Installation** | 2027-01-19 → 2027-01-02 (-17d) | 2027-02-11 → 2027-01-25 (-17d) |  |  |  |
| SDR-2-CON-RW-ZG-1130 | Interlock Installation | 2027-01-19 → 2027-01-02 (-17d) | 2027-02-11 → 2027-01-25 (-17d) |  |  |  |
| 6 | **Road Marking** | 2027-02-13 → 2027-01-26 (-18d) | 2027-03-22 → 2027-02-28 (-22d) |  |  |  |
| SDR-2-CON-RW-ZG-1140 | Retroreflective Thermoplastic White Traffic lines | 2027-02-13 → 2027-01-26 (-18d) | 2027-03-01 → 2027-02-10 (-19d) |  |  |  |
| SDR-2-CON-RW-ZG-1150 | Retroreflective Thermoplastic Yellow, Traffic lines | 2027-03-02 → 2027-02-11 (-19d) | 2027-03-22 → 2027-02-28 (-22d) |  |  |  |
| 7 | **Traffic Signage** | 2027-03-23 → 2027-03-01 (-22d) | 2027-04-14 → 2027-03-28 (-17d) |  |  |  |
| SDR-2-CON-RW-ZG-1160 | Single post-Traffic signs Installation | 2027-03-23 → 2027-03-01 (-22d) | 2027-04-14 → 2027-03-28 (-17d) |  |  |  |
| 1 | **ROAD WORKS IN ( PH2-G-MCA0 )** | 2026-03-29 → 2026-03-30 (+1d) | 2027-03-20 → 2027-02-13 (-35d) |  |  |  |
| 1 | **Earth Works Road** | 2026-03-29 → 2026-03-30 (+1d) | 2026-04-20 → 2026-05-03 (+13d) |  |  |  |
| SDR-2-CON-RW-ZG-1320 | Roadway Excavation and cuttings | 2026-03-29 → 2026-03-30 A (+1d) | 2026-04-20 → 2026-05-03 A (+13d) | 0% → 100% | 19d → none |  |
| 10 | **Backfilling Works** | 2026-04-21 → 2026-03-30 (-22d) | 2026-08-31 → 2026-06-13 (-79d) |  |  |  |
| SDR-2-CON-RW-ZG-2310 | Embankments to the Road 1 Layer | 2026-04-21 → 2026-03-30 A (-22d) | 2026-05-14 → 2026-04-30 A (-14d) | 0% → 100% | 20d → none |  |
| SDR-2-CON-RW-ZG-2320 | Embankments to the Road 2 Layer | 2026-05-16 → 2026-05-02 A (-14d) | 2026-06-13 → 2026-05-18 A (-26d) | 0% → 100% | 20d → none |  |
| SDR-2-CON-RW-ZG-2330 | Embankments to the Road 3 Layer | 2026-06-20 → 2026-05-19 A (-32d) | 2026-07-13 → 2026-06-01 A (-42d) | 0% → 100% | 20d → none |  |
| SDR-2-CON-RW-ZG-1330 | Embankments to the Road 4 Layer | 2026-08-08 → 2026-06-02 A (-67d) | 2026-08-31 → 2026-06-13 A (-79d) | 0% → 100% | 5d → none | SDR-2-PRO-DEL-E-1100, SDR-2-PRO-DEL-E-1020, SDR-2-PRO-DEL-E-1010, SDR-2-CON-RW-ZG-2330 FS+6d → SDR-2-CON-RW-ZG-2330 FS+6d, SDR-2-PRO-DEL-E-1010 |
| 11 | **Subgrade** | 2026-09-07 → 2026-08-20 (-18d) | 2026-10-01 → 2026-08-31 (-31d) |  |  |  |
| SDR-2-CON-RW-ZG-1340 | Subgrade layer works | 2026-09-07 → 2026-08-20 A (-18d) | 2026-10-01 → 2026-08-31 A (-31d) | 0% → 100% | 5d → none |  |
| 9 | **Earth Works Plot** | 2026-10-03 → 2026-05-11 (-145d) | 2026-12-14 → 2026-06-15 (-182d) |  |  |  |
| SDR-2-CON-RW-ZG-1350 | Plot Excavation for cuttings (all types of soil) | 2026-10-03 → 2026-05-11 A (-145d) | 2026-10-26 → 2026-05-23 A (-156d) | 0% → 100% | 21d → none |  |
| SDR-2-CON-RW-ZG-2340 | Embankments to the Plot 1 Layer | 2026-10-27 → 2026-05-23 A (-157d) | 2026-11-19 → 2026-06-04 A (-168d) | 0% → 100% | 21d → none |  |
| SDR-2-CON-RW-ZG-1360 | Embankments to the Plot 2 Layer | 2026-11-21 → 2026-06-06 A (-168d) | 2026-12-14 → 2026-06-15 A (-182d) | 0% → 100% | 23d → none |  |
| 2 | **Base Course** | 2026-10-03 → 2026-08-22 (-42d) | 2026-10-26 → 2026-09-26 (-30d) |  |  |  |
| SDR-2-CON-RW-ZG-1370 | Aggregate base course layer | 2026-10-03 → 2026-08-22 A (-42d) | 2026-10-26 → 2026-09-26 A (-30d) | 0% → 100% | 5d → none |  |
| 8 | **Demolition Work** | 2026-10-27 → 2026-09-28 (-29d) | 2026-11-14 → 2026-10-15 (-30d) |  |  |  |
| SDR-2-CON-RW-ZG-1380 | Removal of curbstone | 2026-10-27 → 2026-09-28 (-29d) | 2026-11-05 → 2026-10-07 (-29d) |  | 5d → 53d |  |
| SDR-2-CON-RW-ZG-1390 | Milling of wearing course | 2026-11-07 → 2026-10-08 (-30d) | 2026-11-14 → 2026-10-15 (-30d) |  | 5d → 53d |  |
| 3 | **Asphalt Works** | 2026-10-27 → 2026-09-28 (-29d) | 2026-11-30 → 2026-11-01 (-29d) |  |  |  |
| SDR-2-CON-RW-ZG-1400 | Asphalt works 1st Layer with MC-01 | 2026-10-27 → 2026-09-28 (-29d) | 2026-11-09 → 2026-10-11 (-29d) |  | 24d → 66d |  |
| SDR-2-CON-RW-ZG-1410 | Asphalt works 2nd layer with RC-02 | 2026-11-10 → 2026-10-12 (-29d) | 2026-11-30 → 2026-11-01 (-29d) |  | 24d → 66d |  |
| 4 | **Kerbstone Installation** | 2026-10-03 → 2026-10-19 (+16d) | 2026-12-24 → 2026-11-25 (-29d) |  |  |  |
| SDR-2-CON-RW-ZG-2570 | Kerbstone Installation "all Types" Part 1 | 2026-10-03 → 2026-10-19 (+16d) | 2026-10-22 → 2026-11-08 (+17d) |  | 24d → 27d |  |
| SDR-2-CON-RW-ZG-1420 | Kerbstone Installation "all Types" Part 2 | 2026-12-01 → 2026-11-02 (-29d) | 2026-12-24 → 2026-11-25 (-29d) |  | 24d → 66d |  |
| 5 | **Interlock Installation** | 2026-12-26 → 2026-11-26 (-30d) | 2027-01-17 → 2026-12-19 (-29d) |  |  |  |
| SDR-2-CON-RW-ZG-1430 | Interlock Installation | 2026-12-26 → 2026-11-26 (-30d) | 2027-01-17 → 2026-12-19 (-29d) |  | 24d → 66d |  |
| 6 | **Road Marking** | 2027-01-18 → 2026-12-20 (-29d) | 2027-02-18 → 2027-01-20 (-29d) |  |  |  |
| SDR-2-CON-RW-ZG-1440 | Retroreflective Thermoplastic White Traffic lines | 2027-01-18 → 2026-12-20 (-29d) | 2027-02-02 → 2027-01-04 (-29d) |  | 24d → 66d |  |
| SDR-2-CON-RW-ZG-1450 | Retroreflective Thermoplastic Yellow, Traffic lines | 2027-02-03 → 2027-01-05 (-29d) | 2027-02-18 → 2027-01-20 (-29d) |  | 24d → 66d |  |
| 7 | **Traffic Signage** | 2027-02-20 → 2027-01-21 (-30d) | 2027-03-20 → 2027-02-13 (-35d) |  |  |  |
| SDR-2-CON-RW-ZG-1460 | Single post-Traffic signs Installation | 2027-02-20 → 2027-01-21 (-30d) | 2027-03-20 → 2027-02-13 (-35d) |  | 24d → 66d |  |
| 6 | **ROAD WORKS IN ( PH2-ART-MC00 )** | 2026-03-25 → 2026-03-26 (+1d) | 2027-03-18 → 2027-03-30 (+12d) |  |  |  |
| 1 | **Earth Works Road** | 2026-03-25 → 2026-03-26 (+1d) | 2026-04-16 → 2026-05-29 (+43d) |  |  |  |
| SDR-2-CON-RW-ZG-1170 | Roadway Excavation and cuttings | 2026-03-25 → 2026-03-26 A (+1d) | 2026-04-16 → 2026-05-29 A (+43d) | 0% → 100% | 19d → none |  |
| 10 | **Backfilling Works** | 2026-04-18 → 2026-03-28 (-21d) | 2026-07-28 → 2026-06-30 (-28d) |  |  |  |
| SDR-2-CON-RW-ZG-2270 | Embankments to the Road 1 Layer | 2026-04-18 → 2026-03-28 A (-21d) | 2026-05-11 → 2026-06-09 A (+29d) | 0% → 100% | 22d → none |  |
| SDR-2-CON-RW-ZG-2280 | Embankments to the Road 2 Layer | 2026-05-12 → 2026-05-25 A (+13d) | 2026-06-09 → 2026-06-22 A (+13d) | 0% → 100% | 22d → none |  |
| SDR-2-CON-RW-ZG-1180 | Embankments to the Road 4 Layer | 2026-07-05 → 2026-06-09 A (-26d) | 2026-07-28 → 2026-06-30 A (-28d) | 0% → 100% | 22d → none |  |
| SDR-2-CON-RW-ZG-2290 | Embankments to the Road 3 Layer | 2026-06-10 → 2026-06-17 A (+7d) | 2026-07-04 → 2026-06-25 A (-9d) | 0% → 100% | 22d → none |  |
| 11 | **Subgrade** | 2026-07-29 → 2026-08-10 (+12d) | 2026-08-22 → 2026-08-24 (+2d) |  |  |  |
| SDR-2-CON-RW-ZG-1190 | Subgrade layer works | 2026-07-29 → 2026-08-10 A (+12d) | 2026-08-22 → 2026-08-24 A (+2d) | 0% → 100% | 22d → none |  |
| 9 | **Earth Works Plot** | 2026-08-23 → 2026-07-01 (-53d) | 2026-11-19 → 2026-07-30 (-112d) |  |  |  |
| SDR-2-CON-RW-ZG-1200 | Plot Excavation for cuttings (all types of soil) | 2026-08-23 → 2026-07-01 A (-53d) | 2026-09-15 → 2026-07-20 A (-57d) | 0% → 100% | 35d → none |  |
| SDR-2-CON-RW-ZG-2300 | Embankments to the Plot 1 Layer | 2026-10-03 → 2026-07-11 A (-84d) | 2026-10-26 → 2026-07-21 A (-97d) | 0% → 100% | 26d → none | SDR-2-CON-RW-ZG-1050 FS+9d, SDR-2-CON-RW-ZG-1200 FS+4d → SDR-2-CON-RW-ZG-1200 FS+4d, SDR-2-CON-RW-ZG-1050 SS |
| SDR-2-CON-RW-ZG-1210 | Embankments to the Plot 2 Layer | 2026-10-27 → 2026-07-20 A (-99d) | 2026-11-19 → 2026-07-30 A (-112d) | 0% → 100% | 26d → none |  |
| 2 | **Base Course** | 2026-08-23 → 2026-08-20 (-3d) | 2026-09-15 → 2026-09-28 (+13d) |  |  |  |
| SDR-2-CON-RW-ZG-1220 | Aggregate base course layer | 2026-08-23 → 2026-08-20 A (-3d) | 2026-09-15 → 2026-09-28 (+13d) | 0% → 80% | 22d → 33d |  |
| 8 | **Demolition Work** | 2026-09-16 → 2026-09-29 (+13d) | 2026-10-11 → 2026-10-22 (+11d) |  |  |  |
| SDR-2-CON-RW-ZG-1230 | Removal of curbstone | 2026-09-16 → 2026-09-29 (+13d) | 2026-09-26 → 2026-10-07 (+11d) |  | 22d → 33d |  |
| SDR-2-CON-RW-ZG-1240 | Milling of wearing course | 2026-09-27 → 2026-10-08 (+11d) | 2026-10-11 → 2026-10-22 (+11d) |  | 22d → 33d |  |
| 3 | **Asphalt Works** | 2026-10-12 → 2026-10-24 (+12d) | 2026-11-29 → 2026-12-10 (+11d) |  |  |  |
| SDR-2-CON-RW-ZG-1250 | Asphalt works 1st Layer with MC-01 | 2026-10-12 → 2026-10-24 (+12d) | 2026-11-04 → 2026-11-16 (+12d) |  | 22d → 33d |  |
| SDR-2-CON-RW-ZG-1260 | Asphalt works 2nd layer with RC-02 | 2026-11-05 → 2026-11-17 (+12d) | 2026-11-29 → 2026-12-10 (+11d) |  | 22d → 33d |  |
| 4 | **Kerbstone Installation** | 2026-08-23 → 2026-09-28 (+36d) | 2026-12-22 → 2027-01-03 (+12d) |  |  |  |
| SDR-2-CON-RW-ZG-2560 | Kerbstone Installation "all Types" Part 1 | 2026-08-23 → 2026-09-28 (+36d) | 2026-09-12 → 2026-10-18 (+36d) |  | 40d → 27d |  |
| SDR-2-CON-RW-ZG-1270 | Kerbstone Installation "all Types" Part 2 | 2026-11-30 → 2026-12-12 (+12d) | 2026-12-22 → 2027-01-03 (+12d) |  | 22d → 33d |  |
| 5 | **Interlock Installation** | 2026-12-23 → 2027-01-04 (+12d) | 2027-01-16 → 2027-01-27 (+11d) |  |  |  |
| SDR-2-CON-RW-ZG-1280 | Interlock Installation | 2026-12-23 → 2027-01-04 (+12d) | 2027-01-16 → 2027-01-27 (+11d) |  | 22d → 33d |  |
| 6 | **Road Marking** | 2027-01-17 → 2027-01-28 (+11d) | 2027-02-17 → 2027-03-02 (+13d) |  |  |  |
| SDR-2-CON-RW-ZG-1290 | Retroreflective Thermoplastic White Traffic lines | 2027-01-17 → 2027-01-28 (+11d) | 2027-02-01 → 2027-02-13 (+12d) |  | 22d → 33d |  |

| ID | Task | Start | Finish | Complete | Total float | Predecessors |
| --- | --- | --- | --- | --- | --- | --- |
| SDR-2-CON-RW-ZG-1300 | Retroreflective Thermoplastic Yellow, Traffic lines | 2027-02-02 → 2027-02-14 (+12d) | 2027-02-17 → 2027-03-02 (+13d) |  | 22d → 33d |  |
| 7 | **Traffic Signage** | 2027-02-18 → 2027-03-03 (+13d) | 2027-03-18 → 2027-03-30 (+12d) |  |  |  |
| SDR-2-CON-RW-ZG-1310 | Single post-Traffic signs Installation | 2027-02-18 → 2027-03-03 (+13d) | 2027-03-18 → 2027-03-30 (+12d) |  | 22d → 33d |  |
| 8 | **ROAD WORKS IN ( PH2-G-MCE0 )** | 2026-04-01 → 2026-03-15 (-17d) | 2027-03-20 → 2027-04-05 (+16d) |  |  |  |
| 1 | **Earth Works Road** | 2026-04-01 → 2026-04-14 (+13d) | 2026-04-25 → 2026-04-30 (+5d) |  |  |  |
| SDR-2-CON-RW-ZG-1470 | Roadway Excavation and cuttings | 2026-04-01 → 2026-04-14 A (+13d) | 2026-04-25 → 2026-04-30 A (+5d) | 0% → 100% | 19d → none |  |
| 10 | **Backfilling Works** | 2026-04-26 → 2026-03-15 (-42d) | 2026-08-17 → 2026-05-13 (-96d) |  |  |  |
| SDR-2-CON-RW-ZG-2350 | Embankments to the Road 1 Layer | 2026-04-26 → 2026-03-15 A (-42d) | 2026-05-19 → 2026-04-01 A (-48d) | 0% → 100% | 33d → none |  |
| SDR-2-CON-RW-ZG-2360 | Embankments to the Road 2 Layer | 2026-05-20 → 2026-04-02 A (-48d) | 2026-06-17 → 2026-04-07 A (-71d) | 0% → 100% | 33d → none |  |
| SDR-2-CON-RW-ZG-2370 | Embankments to the Road 3 Layer | 2026-06-18 → 2026-04-08 A (-71d) | 2026-07-12 → 2026-04-15 A (-88d) | 0% → 100% | 33d → none |  |
| SDR-2-CON-RW-ZG-1480 | Embankments to the Road 4 Layer | 2026-07-25 → 2026-04-14 A (-102d) | 2026-08-17 → 2026-05-13 A (-96d) | 0% → 100% | 29d → none |  |
| 11 | **Subgrade** | 2026-08-25 → 2026-08-24 (-1d) | 2026-09-17 → 2026-09-14 (-3d) |  |  |  |
| SDR-2-CON-RW-ZG-1490 | Subgrade layer works | 2026-08-25 → 2026-08-24 A (-1d) | 2026-09-17 → 2026-09-14 A (-3d) | 0% → 100% | 29d → none |  |
| 9 | **Earth Works Plot** | 2026-09-19 → 2026-05-20 (-122d) | 2026-12-03 → 2026-07-20 (-136d) |  |  |  |
| SDR-2-CON-RW-ZG-1500 | Plot Excavation for cuttings (all types of soil) | 2026-09-19 → 2026-05-20 A (-122d) | 2026-10-13 → 2026-05-31 A (-135d) | 0% → 100% | 29d → none |  |
| SDR-2-CON-RW-ZG-2380 | Embankments to the Plot 1 Layer | 2026-10-14 → 2026-06-04 A (-132d) | 2026-11-07 → 2026-06-22 A (-138d) | 0% → 100% | 29d → none |  |
| SDR-2-CON-RW-ZG-1510 | Embankments to the Plot 2 Layer | 2026-11-10 → 2026-07-13 A (-120d) | 2026-12-03 → 2026-07-20 A (-136d) | 0% → 100% | 29d → none |  |
| 2 | **Base Course** | 2026-09-19 → 2026-09-14 (-5d) | 2026-10-10 → 2026-09-24 (-16d) |  |  |  |
| SDR-2-CON-RW-ZG-1520 | Aggregate base course layer | 2026-09-19 → 2026-09-14 A (-5d) | 2026-10-10 → 2026-09-24 A (-16d) | 0% → 100% | 31d → none |  |
| 8 | **Demolition Work** | 2026-10-11 → 2026-09-28 (-13d) | 2026-10-28 → 2026-11-14 (+17d) |  |  |  |
| SDR-2-CON-RW-ZG-1530 | Removal of curbstone | 2026-10-11 → 2026-09-28 (-13d) | 2026-10-14 → 2026-10-01 (-13d) |  | 31d → 59d |  |
| SDR-2-CON-RW-ZG-1540 | Milling of wearing course | 2026-10-24 → 2026-11-09 (+16d) | 2026-10-28 → 2026-11-14 (+17d) |  | 24d → 27d |  |
| 3 | **Asphalt Works** | 2026-10-29 → 2026-09-26 (-33d) | 2026-11-29 → 2026-12-15 (+16d) |  |  |  |
| SDR-2-CON-RW-ZG-1550 | Asphalt works 1st Layer with MC-01 | 2026-10-29 → 2026-09-26 A (-33d) | 2026-11-11 → 2026-11-28 (+17d) | 0% → 75% | 24d → 27d |  |
| SDR-2-CON-RW-ZG-1560 | Asphalt works 2nd layer with RC-02 | 2026-11-12 → 2026-11-29 (+17d) | 2026-11-29 → 2026-12-15 (+16d) |  | 24d → 27d |  |
| 4 | **Kerbstone Installation** | 2026-09-19 → 2026-09-28 (+9d) | 2026-12-23 → 2027-01-09 (+17d) |  |  |  |
| SDR-2-CON-RW-ZG-2580 | Kerbstone Installation "all Types" Part 1 | 2026-09-19 → 2026-09-28 (+9d) | 2026-10-10 → 2026-10-18 (+8d) |  | 31d → 62d |  |
| SDR-2-CON-RW-ZG-1570 | Kerbstone Installation "all Types" Part 2 | 2026-11-30 → 2026-12-16 (+16d) | 2026-12-23 → 2027-01-09 (+17d) |  | 24d → 27d |  |
| 5 | **Interlock Installation** | 2026-12-24 → 2027-01-10 (+17d) | 2027-01-17 → 2027-02-02 (+16d) |  |  |  |
| SDR-2-CON-RW-ZG-1580 | Interlock Installation | 2026-12-24 → 2027-01-10 (+17d) | 2027-01-17 → 2027-02-02 (+16d) |  | 24d → 27d |  |
| 6 | **Road Marking** | 2027-01-18 → 2027-02-03 (+16d) | 2027-02-18 → 2027-03-08 (+18d) |  |  |  |
| SDR-2-CON-RW-ZG-1590 | Retroreflective Thermoplastic White Traffic lines | 2027-01-18 → 2027-02-03 (+16d) | 2027-02-02 → 2027-02-18 (+16d) |  | 24d → 27d |  |
| SDR-2-CON-RW-ZG-1600 | Retroreflective Thermoplastic Yellow, Traffic lines | 2027-02-03 → 2027-02-20 (+17d) | 2027-02-18 → 2027-03-08 (+18d) |  | 24d → 27d |  |
| 7 | **Traffic Signage** | 2027-02-20 → 2027-03-14 (+22d) | 2027-03-20 → 2027-04-05 (+16d) |  |  |  |
| SDR-2-CON-RW-ZG-1610 | Single post-Traffic signs Installation | 2027-02-20 → 2027-03-14 (+22d) | 2027-03-20 → 2027-04-05 (+16d) |  | 24d → 27d |  |
| 4 | **ROAD WORKS IN ( PH2-G-MCD0 )** | 2026-04-05 → 2026-03-21 (-15d) | 2027-03-21 → 2027-04-13 (+23d) |  |  |  |
| 1 | **Earth Works Road** | 2026-04-05 → 2026-03-21 (-15d) | 2026-04-27 → 2026-04-14 (-13d) |  |  |  |
| SDR-2-CON-RW-ZG-1620 | Roadway Excavation and cuttings | 2026-04-05 → 2026-03-21 A (-15d) | 2026-04-27 → 2026-04-14 A (-13d) | 0% → 100% | 19d → none |  |
| 10 | **Backfilling Works** | 2026-05-02 → 2026-03-29 (-34d) | 2026-08-18 → 2026-05-25 (-85d) |  |  |  |
| SDR-2-CON-RW-ZG-2390 | Embankments to the Road 1 Layer | 2026-05-02 → 2026-03-29 A (-34d) | 2026-05-25 → 2026-04-15 A (-40d) | 0% → 100% | 19d → none | SDR-2-CON-RW-ZG-1620 FS+3d → SDR-2-CON-RW-ZG-1620 |
| SDR-2-CON-RW-ZG-2400 | Embankments to the Road 2 Layer | 2026-05-26 → 2026-04-15 A (-41d) | 2026-06-23 → 2026-05-13 A (-41d) | 0% → 100% | 19d → none |  |
| SDR-2-CON-RW-ZG-2410 | Embankments to the Road 3 Layer | 2026-06-24 → 2026-05-16 A (-39d) | 2026-07-18 → 2026-05-25 A (-54d) | 0% → 100% | 19d → none |  |
| SDR-2-CON-RW-ZG-1630 | Embankments to the Road 4 Layer | 2026-07-26 → 2026-05-24 A (-63d) | 2026-08-18 → 2026-05-24 A (-86d) | 0% → 100% | 19d → none |  |
| 11 | **Subgrade** | 2026-08-24 → 2026-09-10 (+17d) | 2026-09-16 → 2026-10-11 (+25d) |  |  |  |
| SDR-2-CON-RW-ZG-1640 | Subgrade layer works | 2026-08-24 → 2026-09-10 A (+17d) | 2026-09-16 → 2026-10-11 (+25d) | 0% → 45% | 19d → 17d |  |
| 9 | **Earth Works Plot** | 2026-09-17 → 2026-05-18 (-122d) | 2026-12-03 → 2026-10-18 (-46d) |  |  |  |
| SDR-2-CON-RW-ZG-1650 | Plot Excavation for cuttings (all types of soil) | 2026-09-17 → 2026-05-18 A (-122d) | 2026-10-12 → 2026-10-11 (-1d) | 0% → 60% | 29d → 47d | SDR-2-CON-RW-ZG-1620, SDR-2-CON-RW-ZG-1640 → SDR-2-CON-RW-ZG-1640 FF, SDR-2-CON-RW-ZG-1620 |
| SDR-2-CON-RW-ZG-2420 | Embankments to the Plot 1 Layer | 2026-10-13 → 2026-06-04 A (-131d) | 2026-11-05 → 2026-10-18 (-18d) | 0% → 80% | 29d → 62d | SDR-2-CON-RW-ZG-2580, SDR-2-CON-RW-ZG-1650 → SDR-2-CON-RW-ZG-1650 FF, SDR-2-CON-RW-ZG-2580 FF |
| SDR-2-CON-RW-ZG-1660 | Embankments to the Plot 2 Layer | 2026-11-10 → 2026-07-07 A (-126d) | 2026-12-03 → 2026-10-18 (-46d) | 0% → 40% | 29d → 70d | SDR-2-CON-RW-ZG-2380, SDR-2-CON-RW-ZG-2420 FS+3d → SDR-2-CON-RW-ZG-2380, SDR-2-CON-RW-ZG-2420 FF |
| 2 | **Base Course** | 2026-09-17 → 2026-10-12 (+25d) | 2026-10-06 → 2026-10-29 (+23d) |  |  |  |
| SDR-2-CON-RW-ZG-1670 | Aggregate base course layer | 2026-09-17 → 2026-10-12 (+25d) | 2026-10-06 → 2026-10-29 (+23d) |  | 19d → 17d |  |
| 8 | **Demolition Work** | 2026-10-07 → 2026-10-31 (+24d) | 2026-10-17 → 2026-11-09 (+23d) |  |  |  |
| SDR-2-CON-RW-ZG-1680 | Removal of curbstone | 2026-10-07 → 2026-10-31 (+24d) | 2026-10-11 → 2026-11-03 (+23d) |  | 19d → 17d |  |
| SDR-2-CON-RW-ZG-1690 | Milling of wearing course | 2026-10-12 → 2026-11-04 (+23d) | 2026-10-17 → 2026-11-09 (+23d) |  | 19d → 17d |  |
| 3 | **Asphalt Works** | 2026-10-18 → 2026-11-10 (+23d) | 2026-12-01 → 2026-12-24 (+23d) |  |  |  |
| SDR-2-CON-RW-ZG-1700 | Asphalt works 1st Layer with MC-01 | 2026-10-18 → 2026-11-10 (+23d) | 2026-11-07 → 2026-11-30 (+23d) |  | 19d → 17d |  |
| SDR-2-CON-RW-ZG-1710 | Asphalt works 2nd layer with RC-02 | 2026-11-08 → 2026-12-01 (+23d) | 2026-12-01 → 2026-12-24 (+23d) |  | 19d → 17d |  |
| 4 | **Kerbstone Installation** | 2026-09-17 → 2026-10-12 (+25d) | 2026-12-26 → 2027-01-18 (+23d) |  |  |  |
| SDR-2-CON-RW-ZG-2590 | Kerbstone Installation "all Types" Part 1 | 2026-09-17 → 2026-10-12 (+25d) | 2026-10-08 → 2026-11-01 (+24d) |  | 25d → 22d |  |
| SDR-2-CON-RW-ZG-1720 | Kerbstone Installation "all Types" Part 2 | 2026-12-02 → 2026-12-26 (+24d) | 2026-12-26 → 2027-01-18 (+23d) |  | 19d → 17d |  |
| 5 | **Interlock Installation** | 2026-12-27 → 2027-01-19 (+23d) | 2027-01-18 → 2027-02-10 (+23d) |  |  |  |
| SDR-2-CON-RW-ZG-1730 | Interlock Installation | 2026-12-27 → 2027-01-19 (+23d) | 2027-01-18 → 2027-02-10 (+23d) |  | 19d → 17d |  |
| 6 | **Road Marking** | 2027-01-19 → 2027-02-11 (+23d) | 2027-02-20 → 2027-03-21 (+29d) |  |  |  |
| SDR-2-CON-RW-ZG-1740 | Retroreflective Thermoplastic White Traffic lines | 2027-01-19 → 2027-02-11 (+23d) | 2027-02-03 → 2027-02-28 (+25d) |  | 19d → 17d |  |
| SDR-2-CON-RW-ZG-1750 | Retroreflective Thermoplastic Yellow, Traffic lines | 2027-02-04 → 2027-03-01 (+25d) | 2027-02-20 → 2027-03-21 (+29d) |  | 19d → 17d |  |
| 7 | **Traffic Signage** | 2027-02-21 → 2027-03-22 (+29d) | 2027-03-21 → 2027-04-13 (+23d) |  |  |  |
| SDR-2-CON-RW-ZG-1760 | Single post-Traffic signs Installation | 2027-02-21 → 2027-03-22 (+29d) | 2027-03-21 → 2027-04-13 (+23d) |  | 19d → 17d |  |
| 2 | **ROAD WORKS IN ( PH2-G-MCF0 )** | 2026-04-08 → 2026-03-25 (-14d) | 2027-03-23 → 2027-03-24 (+1d) |  |  |  |
| 1 | **Earth Works Road** | 2026-04-08 → 2026-03-25 (-14d) | 2026-05-02 → 2026-05-13 (+11d) |  |  |  |
| SDR-2-CON-RW-ZG-1770 | Roadway Excavation and cuttings | 2026-04-08 → 2026-03-25 A (-14d) | 2026-05-02 → 2026-05-13 A (+11d) | 0% → 100% | 23d → none |  |

| ID | Task | Start | Finish | Complete | Total float | Predecessors |
| --- | --- | --- | --- | --- | --- | --- |
| 10 | **Backfilling Works** | 2026-05-06 → 2026-03-25 (-42d) | 2026-08-23 → 2026-06-18 (-66d) |  |  |  |
| SDR-2-CON-RW-ZG-2430 | Embankments to the Road 1 Layer | 2026-05-06 → 2026-03-25 A (-42d) | 2026-06-03 → 2026-04-15 A (-49d) | 0% → 100% | 23d → none | SDR-2-CON-RW-ZG-1770 FS+3d → SDR-2-CON-RW-ZG-1770 |
| SDR-2-CON-RW-ZG-2440 | Embankments to the Road 2 Layer | 2026-06-04 → 2026-04-07 A (-58d) | 2026-06-28 → 2026-04-30 A (-59d) | 0% → 100% | 23d → none |  |
| SDR-2-CON-RW-ZG-2450 | Embankments to the Road 3 Layer | 2026-06-29 → 2026-05-02 A (-58d) | 2026-07-22 → 2026-05-21 A (-62d) | 0% → 100% | 23d → none |  |
| SDR-2-CON-RW-ZG-1780 | Embankments to the Road 4 Layer | 2026-07-30 → 2026-05-21 A (-70d) | 2026-08-23 → 2026-06-18 A (-66d) | 0% → 100% | 23d → none |  |
| 11 | **Subgrade** | 2026-08-24 → 2026-08-15 (-9d) | 2026-09-07 → 2026-09-03 (-4d) |  |  |  |
| SDR-2-CON-RW-ZG-1790 | Subgrade layer works | 2026-08-24 → 2026-08-15 A (-9d) | 2026-09-07 → 2026-09-03 A (-4d) | 0% → 100% | 23d → none |  |
| 9 | **Earth Works Plot** | 2026-09-08 → 2026-05-04 (-127d) | 2026-11-21 → 2026-09-07 (-75d) |  |  |  |
| SDR-2-CON-RW-ZG-1800 | Plot Excavation for cuttings (all types of soil) | 2026-09-08 → 2026-05-04 A (-127d) | 2026-10-03 → 2026-05-18 A (-138d) | 0% → 100% | 33d → none |  |
| SDR-2-CON-RW-ZG-2460 | Embankments to the Plot1 Layer | 2026-10-04 → 2026-05-18 A (-139d) | 2026-10-27 → 2026-05-24 A (-156d) | 0% → 100% | 33d → none |  |
| SDR-2-CON-RW-ZG-1810 | Embankments to the Plot 2 Layer | 2026-10-28 → 2026-05-24 A (-157d) | 2026-11-21 → 2026-09-07 A (-75d) | 0% → 100% | 33d → none |  |
| 2 | **Base Course** | 2026-09-08 → 2026-08-31 (-8d) | 2026-10-03 → 2026-09-14 (-19d) |  |  |  |
| SDR-2-CON-RW-ZG-1820 | Aggregate base course layer | 2026-09-08 → 2026-08-31 A (-8d) | 2026-10-03 → 2026-09-14 A (-19d) | 0% → 100% | 23d → none |  |
| 8 | **Demolition Work** | 2026-10-04 → 2026-09-28 (-6d) | 2026-10-19 → 2026-11-09 (+21d) |  |  |  |
| SDR-2-CON-RW-ZG-1830 | Removal of curbstone | 2026-10-04 → 2026-09-28 (-6d) | 2026-10-11 → 2026-10-05 (-6d) |  | 23d → 45d |  |
| SDR-2-CON-RW-ZG-1840 | Milling of wearing course | 2026-10-12 → 2026-11-02 (+21d) | 2026-10-19 → 2026-11-09 (+21d) |  | 23d → 22d |  |
| 3 | **Asphalt Works** | 2026-10-20 → 2026-09-15 (-35d) | 2026-12-02 → 2026-12-03 (+1d) |  |  |  |
| SDR-2-CON-RW-ZG-1850 | Asphalt works 1st Layer with MC-01 | 2026-10-20 → 2026-09-15 A (-35d) | 2026-11-08 → 2026-09-24 A (-45d) | 0% → 100% | 23d → none | SDR-2-CON-RW-ZG-1820, SDR-2-CON-RW-ZG-1840 → SDR-2-CON-RW-ZG-1820, SDR-2-CON-RW-ZG-1840 FF |
| SDR-2-CON-RW-ZG-1860 | Asphalt works 2nd layer with RC-02 | 2026-11-09 → 2026-11-10 (+1d) | 2026-12-02 → 2026-12-03 (+1d) |  | 23d → 22d |  |
| 4 | **Kerbstone Installation** | 2026-09-08 → 2026-09-28 (+20d) | 2026-12-27 → 2026-12-28 (+1d) |  |  |  |
| SDR-2-CON-RW-ZG-2600 | Kerbstone Installation "all Types" Part 1 | 2026-09-08 → 2026-09-28 (+20d) | 2026-09-29 → 2026-10-18 (+19d) |  | 25d → 32d |  |
| SDR-2-CON-RW-ZG-1870 | Kerbstone Installation "all Types" Part 2 | 2026-12-03 → 2026-12-05 (+2d) | 2026-12-27 → 2026-12-28 (+1d) |  | 23d → 22d |  |
| 5 | **Interlock Installation** | 2026-12-28 → 2026-12-29 (+1d) | 2027-01-20 → 2027-01-21 (+1d) |  |  |  |
| SDR-2-CON-RW-ZG-1880 | Interlock Installation | 2026-12-28 → 2026-12-29 (+1d) | 2027-01-20 → 2027-01-21 (+1d) |  | 23d → 22d |  |
| 6 | **Road Marking** | 2027-01-21 → 2027-01-23 (+2d) | 2027-02-23 → 2027-02-24 (+1d) |  |  |  |
| SDR-2-CON-RW-ZG-1890 | Retroreflective Thermoplastic White Traffic lines | 2027-01-21 → 2027-01-23 (+2d) | 2027-02-06 → 2027-02-07 (+1d) |  | 23d → 22d |  |
| SDR-2-CON-RW-ZG-1900 | Retroreflective Thermoplastic Yellow, Traffic lines | 2027-02-07 → 2027-02-08 (+1d) | 2027-02-23 → 2027-02-24 (+1d) |  | 23d → 22d |  |
| 7 | **Traffic Signage** | 2027-02-24 → 2027-02-25 (+1d) | 2027-03-23 → 2027-03-24 (+1d) |  |  |  |
| SDR-2-CON-RW-ZG-1910 | Single post-Traffic signs Installation | 2027-02-24 → 2027-02-25 (+1d) | 2027-03-23 → 2027-03-24 (+1d) |  | 23d → 22d |  |
| 3 | **ROAD WORKS IN ( PH2-G-MCG0 )** | 2026-04-08 → 2026-03-15 (-24d) | 2027-03-20 → 2027-03-08 (-12d) |  |  |  |
| 1 | **Earth Works Road** | 2026-04-08 → 2026-03-26 (-13d) | 2026-05-02 → 2026-05-13 (+11d) |  |  |  |
| SDR-2-CON-RW-ZG-1920 | Roadway Excavation and cuttings | 2026-04-08 → 2026-03-26 A (-13d) | 2026-05-02 → 2026-05-13 A (+11d) | 0% → 100% | 26d → none |  |
| 10 | **Backfilling Works** | 2026-05-03 → 2026-03-15 (-49d) | 2026-08-16 → 2026-07-11 (-36d) |  |  |  |
| SDR-2-CON-RW-ZG-2470 | Embankments to the Road 1 Layer | 2026-05-03 → 2026-03-15 A (-49d) | 2026-05-26 → 2026-04-02 A (-54d) | 0% → 100% | 26d → none |  |
| SDR-2-CON-RW-ZG-2480 | Embankments to the Road 2 Layer | 2026-06-01 → 2026-04-07 A (-55d) | 2026-06-24 → 2026-04-16 A (-69d) | 0% → 100% | 26d → none |  |
| SDR-2-CON-RW-ZG-2490 | Embankments to the Road 3 Layer | 2026-06-25 → 2026-04-25 A (-61d) | 2026-07-19 → 2026-05-07 A (-73d) | 0% → 100% | 26d → none |  |
| SDR-2-CON-RW-ZG-1930 | Embankments to the Road 4 Layer | 2026-07-23 → 2026-05-02 A (-82d) | 2026-08-16 → 2026-07-11 A (-36d) | 0% → 100% | 26d → none |  |
| 11 | **Subgrade** | 2026-08-20 → 2026-08-15 (-5d) | 2026-09-13 → 2026-08-31 (-13d) |  |  |  |
| SDR-2-CON-RW-ZG-1940 | Subgrade layer works | 2026-08-20 → 2026-08-15 A (-5d) | 2026-09-13 → 2026-08-31 A (-13d) | 0% → 100% | 26d → none |  |
| 9 | **Earth Works Plot** | 2026-09-14 → 2026-05-18 (-119d) | 2026-11-30 → 2026-09-29 (-62d) |  |  |  |
| SDR-2-CON-RW-ZG-1950 | Plot Excavation for cuttings (all types of soil) | 2026-09-14 → 2026-05-18 A (-119d) | 2026-10-08 → 2026-09-28 (-10d) |  | 36d → 48d |  |
| SDR-2-CON-RW-ZG-2500 | Embankments to the Plot 1 Layer | 2026-10-13 → 2026-06-11 A (-124d) | 2026-11-05 → 2026-09-28 (-38d) | 0% → 80% | 33d → 66d | SDR-2-CON-RW-ZG-1650, SDR-2-CON-RW-ZG-1950 → SDR-2-CON-RW-ZG-1950 FF |
| SDR-2-CON-RW-ZG-1960 | Embankments to the Plot 2 Layer | 2026-11-07 → 2026-06-22 A (-138d) | 2026-11-30 → 2026-09-29 (-62d) | 0% → 45% | 37d → 100d | SDR-2-CON-RW-ZG-2500 FF, SDR-2-CON-RW-ZG-2500 → SDR-2-CON-RW-ZG-2500 |
| 2 | **Base Course** | 2026-09-14 → 2026-08-27 (-18d) | 2026-10-08 → 2026-09-03 (-35d) |  |  |  |
| SDR-2-CON-RW-ZG-1970 | Aggregate base course layer | 2026-09-14 → 2026-08-27 A (-18d) | 2026-10-08 → 2026-09-03 A (-35d) | 0% → 100% | 26d → none |  |
| 8 | **Demolition Work** | 2026-10-10 → 2026-09-28 (-12d) | 2026-10-27 → 2026-11-03 (+7d) |  |  |  |
| SDR-2-CON-RW-ZG-1980 | Removal of curbstone | 2026-10-10 → 2026-09-28 (-12d) | 2026-10-18 → 2026-10-06 (-12d) |  | 26d → 48d |  |
| SDR-2-CON-RW-ZG-1990 | Milling of wearing course | 2026-10-19 → 2026-10-26 (+7d) | 2026-10-27 → 2026-11-03 (+7d) |  | 26d → 32d |  |
| 3 | **Asphalt Works** | 2026-10-28 → 2026-09-05 (-53d) | 2026-11-29 → 2026-11-22 (-7d) |  |  |  |
| SDR-2-CON-RW-ZG-2000 | Asphalt works 1st Layer with MC-01 | 2026-10-28 → 2026-09-05 A (-53d) | 2026-11-10 → 2026-09-24 A (-47d) | 0% → 100% | 26d → none | SDR-2-CON-RW-ZG-1970, SDR-2-CON-RW-ZG-1990 → SDR-2-CON-RW-ZG-1970, SDR-2-CON-RW-ZG-1990 FF |
| SDR-2-CON-RW-ZG-2010 | Asphalt works 2nd layer with RC-02 | 2026-11-11 → 2026-11-04 (-7d) | 2026-11-29 → 2026-11-22 (-7d) |  | 26d → 32d |  |
| 4 | **Kerbstone Installation** | 2026-09-14 → 2026-09-28 (+14d) | 2026-12-23 → 2026-12-16 (-7d) |  |  |  |
| SDR-2-CON-RW-ZG-2610 | Kerbstone Installation "all Types" Part 1 | 2026-09-14 → 2026-09-28 (+14d) | 2026-10-05 → 2026-10-18 (+13d) |  | 37d → 38d |  |
| SDR-2-CON-RW-ZG-2020 | Kerbstone Installation "all Types" Part 2 | 2026-11-30 → 2026-11-23 (-7d) | 2026-12-23 → 2026-12-16 (-7d) |  | 26d → 32d |  |
| 5 | **Interlock Installation** | 2026-12-24 → 2026-12-17 (-7d) | 2027-01-17 → 2027-01-10 (-7d) |  |  |  |
| SDR-2-CON-RW-ZG-2030 | Interlock Installation | 2026-12-24 → 2026-12-17 (-7d) | 2027-01-17 → 2027-01-10 (-7d) |  | 26d → 32d |  |
| 6 | **Road Marking** | 2027-01-18 → 2027-01-11 (-7d) | 2027-02-18 → 2027-02-11 (-7d) |  |  |  |
| SDR-2-CON-RW-ZG-2040 | Retroreflective Thermoplastic White Traffic lines | 2027-01-18 → 2027-01-11 (-7d) | 2027-02-02 → 2027-01-26 (-7d) |  | 26d → 32d |  |
| SDR-2-CON-RW-ZG-2050 | Retroreflective Thermoplastic Yellow, Traffic lines | 2027-02-03 → 2027-01-27 (-7d) | 2027-02-18 → 2027-02-11 (-7d) |  | 26d → 32d |  |
| 7 | **Traffic Signage** | 2027-02-20 → 2027-02-13 (-7d) | 2027-03-20 → 2027-03-08 (-12d) |  |  |  |
| SDR-2-CON-RW-ZG-2060 | Single post-Traffic signs Installation | 2027-02-20 → 2027-02-13 (-7d) | 2027-03-20 → 2027-03-08 (-12d) |  | 26d → 32d |  |
| 7 | **ROAD WORKS IN ( PH2-G-MCZ0 )** | 2026-04-08 → 2026-03-29 (-10d) | 2027-03-20 → 2027-03-08 (-12d) |  |  |  |
| 1 | **Earth Works Road** | 2026-04-08 → 2026-03-29 (-10d) | 2026-05-02 → 2026-05-14 (+12d) |  |  |  |
| SDR-2-CON-RW-ZG-2070 | Roadway Excavation and cuttings | 2026-04-08 → 2026-03-29 A (-10d) | 2026-05-02 → 2026-05-14 A (+12d) | 0% → 100% | 28d → none |  |
| 10 | **Backfilling Works** | 2026-05-03 → 2026-03-29 (-35d) | 2026-08-12 → 2026-07-08 (-35d) |  |  |  |
| SDR-2-CON-RW-ZG-2510 | Embankments to the Road 1 Layer | 2026-05-03 → 2026-03-29 A (-35d) | 2026-05-26 → 2026-04-08 A (-48d) | 0% → 100% | 28d → none |  |
| SDR-2-CON-RW-ZG-2520 | Embankments to the Road 2 Layer | 2026-06-01 → 2026-04-28 A (-34d) | 2026-06-24 → 2026-05-24 A (-31d) | 0% → 100% | 28d → none |  |
| SDR-2-CON-RW-ZG-2530 | Embankments to the Road 3 Layer | 2026-06-25 → 2026-05-18 A (-38d) | 2026-07-19 → 2026-05-31 A (-49d) | 0% → 100% | 28d → none |  |
| SDR-2-CON-RW-ZG-2080 | Embankments to the Road 4 Layer | 2026-07-20 → 2026-05-24 A (-57d) | 2026-08-12 → 2026-07-08 A (-35d) | 0% → 100% | 28d → none |  |
| 11 | **Subgrade** | 2026-08-13 → 2026-08-20 (+7d) | 2026-09-06 → 2026-09-09 (+3d) |  |  |  |

| ID | Task | Start | Finish | Complete | Total float | Predecessors |
| --- | --- | --- | --- | --- | --- | --- |
| SDR-2-CON-RW-ZG-2090 | Subgrade layer works | 2026-08-13 → 2026-08-20 A (+7d) | 2026-09-06 → 2026-09-09 A (+3d) | 0% → 100% | 28d → none |  |
| 9 | **Earth Works Plot** | 2026-09-07 → 2026-04-30 (-130d) | 2026-11-19 → 2026-05-24 (-179d) |  |  |  |
| SDR-2-CON-RW-ZG-2100 | Plot Excavation for cuttings (all types of soil) | 2026-09-07 → 2026-04-30 A (-130d) | 2026-10-01 → 2026-05-10 A (-144d) | 0% → 100% | 28d → none |  |
| SDR-2-CON-RW-ZG-2540 | Embankments to the Plot 1 Layer | 2026-10-03 → 2026-05-10 A (-146d) | 2026-10-26 → 2026-05-17 A (-162d) | 0% → 100% | 28d → none |  |
| SDR-2-CON-RW-ZG-2110 | Embankments to the Plot 2 Layer | 2026-10-27 → 2026-05-17 A (-163d) | 2026-11-19 → 2026-05-24 A (-179d) | 0% → 100% | 28d → none |  |
| 2 | **Base Course** | 2026-09-07 → 2026-09-10 (+3d) | 2026-10-01 → 2026-09-17 (-14d) |  |  |  |
| SDR-2-CON-RW-ZG-2120 | Aggregate base course layer | 2026-09-07 → 2026-09-10 A (+3d) | 2026-10-01 → 2026-09-17 A (-14d) | 0% → 100% | 36d → none |  |
| 8 | **Demolition Work** | 2026-10-14 → 2026-10-20 (+6d) | 2026-10-31 → 2026-11-07 (+7d) |  |  |  |
| SDR-2-CON-RW-ZG-2130 | Removal of curbstone | 2026-10-14 → 2026-10-20 (+6d) | 2026-10-19 → 2026-10-26 (+7d) |  | 26d → 32.1d |  |
| SDR-2-CON-RW-ZG-2140 | Milling of wearing course | 2026-10-20 → 2026-10-26 (+6d) | 2026-10-31 → 2026-11-07 (+7d) |  | 26d → 32.1d |  |
| 3 | **Asphalt Works** | 2026-11-01 → 2026-09-14 (-48d) | 2026-11-29 → 2026-11-22 (-7d) |  |  |  |
| SDR-2-CON-RW-ZG-2150 | Asphalt works 1st Layer with MC-01 | 2026-11-01 → 2026-09-14 A (-48d) | 2026-11-14 → 2026-09-26 A (-49d) | 0% → 100% | 26d → none | SDR-2-CON-RW-ZG-2120, SDR-2-CON-RW-ZG-2140 → SDR-2-CON-RW-ZG-2120, SDR-2-CON-RW-ZG-2140 FF |
| SDR-2-CON-RW-ZG-2160 | Asphalt works 2nd layer with RC-02 | 2026-11-15 → 2026-11-07 (-8d) | 2026-11-29 → 2026-11-22 (-7d) |  | 26d → 32.1d | SDR-2-CON-RW-ZG-2620, SDR-2-CON-RW-ZG-2150 → SDR-2-CON-RW-ZG-2150 |
| 4 | **Kerbstone Installation** | 2026-10-05 → 2026-09-28 (-7d) | 2026-12-23 → 2026-12-16 (-7d) |  |  |  |
| SDR-2-CON-RW-ZG-2620 | Kerbstone Installation "all Types" Part 1 | 2026-10-05 → 2026-09-28 (-7d) | 2026-10-25 → 2026-10-18 (-7d) |  | 43d → 62d | SDR-2-CON-RW-ZG-2120, SDR-2-PRO-DES-C-1020 → SDR-2-CON-RW-ZG-2120 |
| SDR-2-CON-RW-ZG-2170 | Kerbstone Installation "all Types" Part 2 | 2026-11-30 → 2026-11-22 (-8d) | 2026-12-23 → 2026-12-16 (-7d) |  | 26d → 32.1d | SDR-2-CON-RW-ZG-2160 → SDR-2-CON-RW-ZG-2160, SDR-2-CON-RW-ZG-2620 |
| 5 | **Interlock Installation** | 2026-12-24 → 2026-12-16 (-8d) | 2027-01-17 → 2027-01-10 (-7d) |  |  |  |
| SDR-2-CON-RW-ZG-2180 | Interlock Installation | 2026-12-24 → 2026-12-16 (-8d) | 2027-01-17 → 2027-01-10 (-7d) |  | 26d → 32.1d |  |
| 6 | **Road Marking** | 2027-01-18 → 2027-01-10 (-8d) | 2027-02-18 → 2027-02-11 (-7d) |  |  |  |
| SDR-2-CON-RW-ZG-2190 | Retroreflective Thermoplastic White Traffic lines | 2027-01-18 → 2027-01-10 (-8d) | 2027-02-02 → 2027-01-26 (-7d) |  | 26d → 32.1d |  |
| SDR-2-CON-RW-ZG-2200 | Retroreflective Thermoplastic Yellow, Traffic lines | 2027-02-03 → 2027-01-26 (-8d) | 2027-02-18 → 2027-02-11 (-7d) |  | 26d → 32.1d |  |
| 7 | **Traffic Signage** | 2027-02-20 → 2027-02-11 (-9d) | 2027-03-20 → 2027-03-08 (-12d) |  |  |  |
| SDR-2-CON-RW-ZG-2210 | Single post-Traffic signs Installation | 2027-02-20 → 2027-02-11 (-9d) | 2027-03-20 → 2027-03-08 (-12d) |  | 26d → 32.1d |  |
| ST | **Storm Water Drainage Network** | 2026-03-30 → 2026-03-24 (-6d) | 2027-05-04 → 2027-05-01 (-3d) |  |  |  |
| ZA | **ZONE A** | 2026-03-30 → 2026-03-24 (-6d) | 2027-04-24 → 2027-05-01 (+7d) |  |  |  |
| 11 | **STORM WATER LINE IN ( PH2-A-MCB0 )** | 2026-07-12 → 2026-05-19 (-54d) | 2027-04-24 → 2027-02-24 (-59d) |  |  |  |
| 8 | **Pipes Works** | 2026-07-12 → 2026-05-19 (-54d) | 2027-01-07 → 2027-01-11 (+4d) |  |  |  |
| 1 | **Excavation** | 2026-07-12 → 2026-05-19 (-54d) | 2026-09-27 → 2026-07-07 (-82d) |  |  |  |
| SDR-2-CON-ST-ZA-6900 | Excavation for GRP Pipes Section 1 | 2026-07-12 → 2026-05-19 A (-54d) | 2026-08-04 → 2026-05-31 A (-65d) | 0% → 100% | 4d → none | SDR-2-CON-RW-ZA-2870, SDR-2-ENG-APP-M-1130, SDR-2-PRO-MSS-C-1080 FS+2d, SDR-2-PRO-DEL-M-1040, SDR-2-PRO-DES-C-1030, SDR-2-PRO-ST-M-1000 → SDR-2-CON-RW-ZA-2870, SDR-2-ENG-APP-M-1130, SDR-2-PRO-MSS-C-1080 FS+2d, SDR-2-PRO-ST-M-1000, SDR-2-PRO-DEL-M-1040 SS, SDR-2-PRO-DES-C-1030 SS |
| SDR-2-CON-ST-ZA-6360 | Excavation for GRP Pipes Section 2 | 2026-08-05 → 2026-06-01 A (-65d) | 2026-08-29 → 2026-06-08 A (-82d) | 0% → 100% | 5d → none |  |
| SDR-2-CON-ST-ZA-1000 | Excavation for GRP Pipes Section 3 | 2026-09-02 → 2026-06-08 A (-86d) | 2026-09-27 → 2026-07-07 A (-82d) | 0% → 100% | 7d → none | SDR-2-PRO-DEL-M-1020, SDR-2-PRO-DES-C-1070, SDR-2-CON-ST-ZA-6360 → SDR-2-CON-ST-ZA-6360, SDR-2-PRO-DES-C-1070, SDR-2-PRO-DEL-M-1020 SS |
| 7 | **bedding Works** | 2026-10-03 → 2026-06-27 (-98d) | 2026-10-26 → 2026-07-09 (-109d) |  |  |  |
| SDR-2-CON-ST-ZA-3450 | Sand bedding for GRP Pipes | 2026-10-03 → 2026-06-27 A (-98d) | 2026-10-26 → 2026-07-09 A (-109d) | 0% → 100% | 7d → none |  |
| 2 | **Pipes Laying** | 2026-10-27 → 2026-08-20 (-68d) | 2026-11-19 → 2026-12-15 (+26d) |  |  |  |
| SDR-2-CON-ST-ZA-1090 | Install ST GRP Pipes | 2026-10-27 → 2026-08-20 A (-68d) | 2026-11-19 → 2026-12-15 (+26d) | 0% → 40% | 7d → 7.1d | SDR-2-PRO-DES-C-1020, SDR-2-CON-ST-ZA-3450 → SDR-2-PRO-DES-C-1020 FF, SDR-2-CON-ST-ZA-3450 |
| 6 | **Testing** | 2026-11-21 → 2026-12-15 (+24d) | 2026-12-14 → 2027-01-09 (+26d) |  |  |  |
| SDR-2-CON-ST-ZA-3440 | Testing ST GRP Pipes | 2026-11-21 → 2026-12-15 (+24d) | 2026-12-14 → 2027-01-09 (+26d) |  | 7d → 7.1d |  |
| 3 | **Backfilling** | 2026-12-15 → 2026-12-17 (+2d) | 2027-01-07 → 2027-01-11 (+4d) |  |  |  |
| SDR-2-CON-ST-ZA-1140 | Backfilling ST GRP Pipes | 2026-12-15 → 2026-12-17 (+2d) | 2027-01-07 → 2027-01-11 (+4d) |  | 7d → 7.1d | SDR-2-CON-ST-ZA-3440 → SDR-2-CON-ST-ZA-3440 SS+2d |
| 4 | **Manholes** | 2026-07-22 → 2026-06-08 (-44d) | 2027-01-16 → 2027-01-11 (-5d) |  |  |  |
| 1 | **Excavation** | 2026-07-22 → 2026-06-08 (-44d) | 2026-10-04 → 2026-11-17 (+44d) |  |  |  |
| SDR-2-CON-ST-ZA-6910 | Excavation Manholes Section 1 | 2026-07-22 → 2026-06-08 A (-44d) | 2026-08-15 → 2026-08-31 A (+16d) | 0% → 100% | 0d → none | SDR-2-CON-ST-ZA-6900 SS, SDR-2-PRO-DEL-M-1030, SDR-2-PRO-ST-M-1050 → SDR-2-CON-ST-ZA-6900 SS, SDR-2-PRO-DEL-M-1030 SS, SDR-2-PRO-ST-M-1050 SS |
| SDR-2-CON-ST-ZA-6370 | Excavation Manholes Section 2 | 2026-08-16 → 2026-06-15 A (-62d) | 2026-09-08 → 2026-06-22 A (-78d) | 0% → 100% | 0d → none |  |
| SDR-2-CON-ST-ZA-1210 | Excavation Manholes Section 3 | 2026-09-09 → 2026-06-22 A (-79d) | 2026-10-04 → 2026-11-17 (+44d) | 0% → 90% | 0d → 7d | SDR-2-PRO-DEL-E-1090, SDR-2-CON-ST-ZA-6370 → SDR-2-CON-ST-ZA-6370, SDR-2-PRO-DEL-E-1090 FF |
| 2 | **bedding Works** | 2026-10-05 → 2026-08-20 (-46d) | 2026-10-28 → 2026-11-17 (+20d) |  |  |  |
| SDR-2-CON-ST-ZA-3520 | Sand bedding for Manholes | 2026-10-05 → 2026-08-20 A (-46d) | 2026-10-28 → 2026-11-17 (+20d) | 0% → 25% | 0d → 7d | SDR-2-PRO-DES-C-1060, SDR-2-CON-ST-ZA-1210, SDR-2-PRO-DEL-E-1050 → SDR-2-PRO-DEL-E-1050, SDR-2-CON-ST-ZA-1210 FF, SDR-2-PRO-DES-C-1060 FF |
| 3 | **Install Manholes** | 2026-10-29 → 2026-08-20 (-70d) | 2026-11-22 → 2026-11-17 (-5d) |  |  |  |
| SDR-2-CON-ST-ZA-3600 | Manholes Installation | 2026-10-29 → 2026-08-20 A (-70d) | 2026-11-22 → 2026-11-17 (-5d) | 0% → 28% | 0d → 7d | SDR-2-CON-RW-ZG-2600, SDR-2-CON-ST-ZA-3520, SDR-2-PRO-DEL-M-1030, SDR-2-PRO-DEL-M-1020, SDR-2-PRO-ST-E-1070 → SDR-2-CON-ST-ZA-3520 FF, SDR-2-PRO-DEL-M-1030 FF, SDR-2-PRO-DEL-M-1020 FF, SDR-2-PRO-ST-E-1070 FF, SDR-2-CON-RW-ZG-2600 FF |
| 4 | **Testing** | 2026-11-29 → 2026-11-24 (-5d) | 2026-12-22 → 2026-12-17 (-5d) |  |  |  |
| SDR-2-CON-ST-ZA-3680 | Testing for Manholes | 2026-11-29 → 2026-11-24 (-5d) | 2026-12-22 → 2026-12-17 (-5d) |  | 0d → 7d |  |
| 5 | **Backfilling** | 2026-12-23 → 2026-12-19 (-4d) | 2027-01-16 → 2027-01-11 (-5d) |  |  |  |
| SDR-2-CON-ST-ZA-3760 | Backfilling for Manholes | 2026-12-23 → 2026-12-19 (-4d) | 2027-01-16 → 2027-01-11 (-5d) |  | 0d → 7d |  |
| 5 | **Catch basin** | 2026-11-23 → 2026-08-16 (-99d) | 2027-04-24 → 2027-02-24 (-59d) |  |  |  |
| 1 | **Excavation** | 2026-11-23 → 2026-08-16 (-99d) | 2027-01-10 → 2026-10-22 (-80d) |  |  |  |
| SDR-2-CON-ST-ZA-6930 | Excavation for Catch basin Section 1 | 2026-11-23 → 2026-08-16 A (-99d) | 2026-12-16 → 2026-09-28 (-79d) | 0% → 40% | 11d → 111d | SDR-2-CON-ST-ZA-6370, SDR-2-CON-ST-ZA-6910, SDR-2-CON-ST-ZA-3600, SDR-2-CON-ST-ZA-3600 FF, SDR-2-PRO-ST-M-1040 → SDR-2-CON-ST-ZA-6370, SDR-2-CON-ST-ZA-6910, SDR-2-PRO-ST-M-1040 FF |
| SDR-2-CON-ST-ZA-1300 | Excavation for Catch basin Section 2 | 2026-12-17 → 2026-09-29 (-79d) | 2027-01-10 → 2026-10-22 (-80d) |  | 11d → 111d |  |
| 2 | **bedding Works** | 2027-01-11 → 2026-10-24 (-79d) | 2027-02-03 → 2026-11-16 (-79d) |  |  |  |
| SDR-2-CON-ST-ZA-3840 | Sand Dedding for Catch basin | 2027-01-11 → 2026-10-24 (-79d) | 2027-02-03 → 2026-11-16 (-79d) |  | 11d → 111d |  |
| 3 | **Install Catch basin** | 2027-02-04 → 2026-11-17 (-79d) | 2027-03-01 → 2026-12-10 (-81d) |  |  |  |
| SDR-2-CON-ST-ZA-3900 | Install Catch basin | 2027-02-04 → 2026-11-17 (-79d) | 2027-03-01 → 2026-12-10 (-81d) |  | 11d → 111d | SDR-2-CON-RW-ZA-2740, SDR-2-CON-CC-ZG-1660, SDR-2-CON-ST-ZA-3840 → SDR-2-CON-RW-ZA-2740, SDR-2-CON-ST-ZA-3840 |
| 4 | **Testing** | 2027-03-02 → 2026-11-17 (-105d) | 2027-03-30 → 2026-12-10 (-110d) |  |  |  |
| SDR-2-CON-ST-ZA-3960 | Testing for Catch basin pipe | 2027-03-02 → 2026-11-17 (-105d) | 2027-03-30 → 2026-12-10 (-110d) |  | 11d → 111d | SDR-2-CON-ST-ZA-3900, SDR-2-MILS-1100 → SDR-2-CON-ST-ZA-3900 SS, SDR-2-MILS-1100 |
| 5 | **Backfilling** | 2027-03-31 → 2026-11-17 (-134d) | 2027-04-24 → 2027-02-24 (-59d) |  |  |  |
| SDR-2-CON-ST-ZA-6940 | Backfilling for Catch basin Section 1 | 2027-03-31 → 2026-11-17 (-134d) | 2027-04-12 → 2026-11-29 (-134d) |  | 11d → 123d | SDR-2-CON-ST-ZA-3960 → SDR-2-CON-ST-ZA-3960 SS |
| SDR-2-CON-ST-ZA-4020 | Backfilling for Catch basin Section 2 | 2027-04-13 → 2027-02-11 (-61d) | 2027-04-24 → 2027-02-24 (-59d) |  | 11d → 57.1d | SDR-2-CON-ST-ZA-6940, SDR-2-CON-RW-ZG-2210 → SDR-2-CON-ST-ZA-6940 SS, SDR-2-CON-RW-ZG-2210 SS |
| 12 | **STORM WATER LINE IN ( PH2-A-MCD0 )** | 2026-07-15 → 2026-06-01 (-44d) | 2027-04-13 → 2027-04-22 (+9d) |  |  |  |
| 8 | **Pipes Works** | 2026-07-15 → 2026-06-08 (-37d) | 2027-01-03 → 2026-11-16 (-48d) |  |  |  |
| 1 | **Excavation** | 2026-07-15 → 2026-06-08 (-37d) | 2026-09-27 → 2026-07-14 (-75d) |  |  |  |
| SDR-2-CON-ST-ZA-6950 | Excavation for GRP Pipes Section 1 | 2026-07-15 → 2026-06-08 A (-37d) | 2026-08-08 → 2026-06-15 A (-54d) | 0% → 100% | 4d → none | SDR-2-CON-ST-ZA-6900 SS+3d, SDR-2-PRO-DEL-E-1090 → SDR-2-CON-ST-ZA-6900 SS+3d |
| SDR-2-CON-ST-ZA-6390 | Excavation for GRP Pipes Section 2 | 2026-08-09 → 2026-06-15 A (-55d) | 2026-09-01 → 2026-06-22 A (-71d) | 0% → 100% | 4d → none |  |

| ID | Task | Start | Finish | Complete | Total float | Predecessors |
| --- | --- | --- | --- | --- | --- | --- |
| SDR-2-CON-ST-ZA-4030 | Excavation for GRP Pipes Section 3 | 2026-09-02 → 2026-06-22 A (-72d) | 2026-09-27 → 2026-07-14 A (-75d) | 0% → 100% | 4d → none |  |
| 7 | **bedding Works** | 2026-09-28 → 2026-08-20 (-39d) | 2026-10-21 → 2026-09-28 (-23d) |  |  |  |
| SDR-2-CON-ST-ZA-4090 | Sand bedding for GRP Pipes | 2026-09-28 → 2026-08-20 A (-39d) | 2026-10-21 → 2026-09-28 (-23d) | 0% → 80% | 9d → 53d |  |
| 2 | **Pipes Laying** | 2026-10-22 → 2026-08-26 (-57d) | 2026-11-15 → 2026-09-28 (-48d) |  |  |  |
| SDR-2-CON-ST-ZA-4040 | Install ST GRP Pipes | 2026-10-22 → 2026-08-26 A (-57d) | 2026-11-15 → 2026-09-28 (-48d) | 0% → 80% | 9d → 53d | SDR-2-CON-ST-ZA-4090 → SDR-2-CON-ST-ZA-4090 FF |
| 6 | **Testing** | 2026-11-16 → 2026-09-29 (-48d) | 2026-12-09 → 2026-10-22 (-48d) |  |  |  |
| SDR-2-CON-ST-ZA-4080 | Testing ST GRP Pipes | 2026-11-16 → 2026-09-29 (-48d) | 2026-12-09 → 2026-10-22 (-48d) |  | 9d → 53d |  |
| 3 | **Backfilling** | 2026-12-10 → 2026-10-24 (-47d) | 2027-01-03 → 2026-11-16 (-48d) |  |  |  |
| SDR-2-CON-ST-ZA-4050 | Backfilling ST GRP Pipes | 2026-12-10 → 2026-10-24 (-47d) | 2027-01-03 → 2026-11-16 (-48d) |  | 9d → 53d |  |
| 4 | **Manholes** | 2026-07-15 → 2026-06-01 (-44d) | 2027-01-03 → 2026-11-17 (-47d) |  |  |  |
| 1 | **Excavation** | 2026-07-15 → 2026-06-01 (-44d) | 2026-09-27 → 2026-08-31 (-27d) |  |  |  |
| SDR-2-CON-ST-ZA-6960 | Excavation Manholes Section 1 | 2026-07-15 → 2026-06-01 A (-44d) | 2026-08-08 → 2026-08-31 A (+23d) | 0% → 100% | 20d → none | SDR-2-CON-ST-ZA-6950 SS, SDR-2-PRO-DES-C-1060, SDR-2-PRO-DES-C-1090, SDR-2-PRO-DES-C-1080 → SDR-2-CON-ST-ZA-6950 SS |
| SDR-2-CON-ST-ZA-6400 | Excavation Manholes Section 2 | 2026-08-09 → 2026-06-08 A (-62d) | 2026-09-01 → 2026-06-15 A (-78d) | 0% → 100% | 20d → none |  |
| SDR-2-CON-ST-ZA-4060 | Excavation Manholes Section 3 | 2026-09-02 → 2026-07-13 A (-51d) | 2026-09-27 → 2026-07-20 A (-69d) | 0% → 100% | 20d → none | SDR-2-PRO-DES-C-1100, SDR-2-CON-ST-ZA-6400 → SDR-2-CON-ST-ZA-6400 |
| 2 | **bedding Works** | 2026-09-28 → 2026-08-27 (-32d) | 2026-10-21 → 2026-09-28 (-23d) |  |  |  |
| SDR-2-CON-ST-ZA-4100 | Sand bedding for Manholes | 2026-09-28 → 2026-08-27 A (-32d) | 2026-10-21 → 2026-09-28 (-23d) | 0% → 25% | 20d → 92.91d |  |
| 3 | **Install Manholes** | 2026-10-22 → 2026-08-30 (-53d) | 2026-11-15 → 2026-09-29 (-47d) |  |  |  |
| SDR-2-CON-ST-ZA-4110 | Manholes Installation | 2026-10-22 → 2026-08-30 A (-53d) | 2026-11-15 → 2026-09-29 (-47d) | 0% → 28% | 20d → 91d | SDR-2-CON-ST-ZA-4100 → SDR-2-CON-ST-ZA-4100 FF |
| 4 | **Testing** | 2026-11-16 → 2026-09-30 (-47d) | 2026-12-09 → 2026-10-24 (-46d) |  |  |  |
| SDR-2-CON-ST-ZA-4120 | Testing for Manholes | 2026-11-16 → 2026-09-30 (-47d) | 2026-12-09 → 2026-10-24 (-46d) |  | 25d → 91d |  |
| 5 | **Backfilling** | 2026-12-10 → 2026-10-25 (-46d) | 2027-01-03 → 2026-11-17 (-47d) |  |  |  |
| SDR-2-CON-ST-ZA-4130 | Backfilling for Manholes | 2026-12-10 → 2026-10-25 (-46d) | 2027-01-03 → 2026-11-17 (-47d) |  | 25d → 91d |  |
| 5 | **Catch basin** | 2026-11-16 → 2026-08-16 (-92d) | 2027-04-13 → 2027-04-22 (+9d) |  |  |  |
| 1 | **Excavation** | 2026-11-16 → 2026-08-16 (-92d) | 2027-01-25 → 2026-11-15 (-71d) |  |  |  |
| SDR-2-CON-ST-ZA-6970 | Excavation for Catch basin Section 1 | 2026-11-16 → 2026-08-16 A (-92d) | 2026-12-09 → 2026-09-29 (-71d) | 0% → 50% | 20d → 127d | SDR-2-CON-ST-ZA-4110 → SDR-2-CON-ST-ZA-4110 FF |
| SDR-2-CON-ST-ZA-6410 | Excavation for Catch basin Section 2 | 2026-12-10 → 2026-09-30 (-71d) | 2027-01-03 → 2026-10-24 (-71d) |  | 20d → 127d |  |
| SDR-2-CON-ST-ZA-4070 | Excavation for Catch basin Section 3 | 2027-01-04 → 2026-10-25 (-71d) | 2027-01-25 → 2026-11-15 (-71d) |  | 20d → 127d |  |
| 2 | **bedding Works** | 2027-01-26 → 2026-12-15 (-42d) | 2027-02-18 → 2027-01-07 (-42d) |  |  |  |
| SDR-2-CON-ST-ZA-4140 | Sand Dedding for Catch basin | 2027-01-26 → 2026-12-15 (-42d) | 2027-02-18 → 2027-01-07 (-42d) |  | 20d → 102d | SDR-2-CON-CC-ZG-1660, SDR-2-CON-CC-ZG-1620, SDR-2-CON-ST-ZA-4070 → SDR-2-CON-CC-ZG-1620, SDR-2-CON-ST-ZA-4070 |
| 3 | **Install Catch basin** | 2027-02-20 → 2027-01-09 (-42d) | 2027-03-21 → 2027-02-01 (-48d) |  |  |  |
| SDR-2-CON-ST-ZA-4150 | Install Catch basin | 2027-02-20 → 2027-01-09 (-42d) | 2027-03-21 → 2027-02-01 (-48d) |  | 20d → 102d |  |
| 4 | **Testing** | 2027-03-22 → 2027-03-31 (+9d) | 2027-04-01 → 2027-04-11 (+10d) |  |  |  |
| SDR-2-CON-ST-ZA-4160 | Testing for Catch basin pipe | 2027-03-22 → 2027-03-31 (+9d) | 2027-04-01 → 2027-04-11 (+10d) |  | 20d → 58d |  |
| 5 | **Backfilling** | 2027-04-03 → 2027-04-12 (+9d) | 2027-04-13 → 2027-04-22 (+9d) |  |  |  |
| SDR-2-CON-ST-ZA-4170 | Backfilling for Catch basin | 2027-04-03 → 2027-04-12 (+9d) | 2027-04-13 → 2027-04-22 (+9d) |  | 20d → 58d |  |
| 13 | **STORM WATER LINE IN ( PH2-A-MCE0 )** | 2026-07-27 → 2026-07-01 (-26d) | 2027-04-20 → 2027-03-03 (-48d) |  |  |  |
| 8 | **Pipes Works** | 2026-07-27 → 2026-07-01 (-26d) | 2027-01-19 → 2026-11-16 (-64d) |  |  |  |
| 1 | **Excavation** | 2026-07-27 → 2026-07-01 (-26d) | 2026-10-13 → 2026-07-20 (-85d) |  |  |  |
| SDR-2-CON-ST-ZA-6980 | Excavation for GRP Pipes Section 1 | 2026-07-27 → 2026-07-01 A (-26d) | 2026-08-19 → 2026-07-09 A (-41d) | 0% → 100% | 0d → none | SDR-2-CON-ST-ZA-6950 SS+5d, SDR-2-PRO-DEL-E-1040, SDR-2-PRO-DEL-E-1070, SDR-2-PRO-DEL-E-1000 → SDR-2-CON-ST-ZA-6950 SS+5d, SDR-2-PRO-DEL-E-1040, SDR-2-PRO-DEL-E-1000 |
| SDR-2-CON-ST-ZA-6420 | Excavation for GRP Pipes Section 2 | 2026-08-20 → 2026-07-09 A (-42d) | 2026-09-13 → 2026-07-12 A (-63d) | 0% → 100% | 12d → none |  |
| SDR-2-CON-ST-ZA-4180 | Excavation for GRP Pipes Section 3 | 2026-09-19 → 2026-07-13 A (-68d) | 2026-10-13 → 2026-07-20 A (-85d) | 0% → 100% | 12d → none | SDR-2-PRO-DES-C-1060, SDR-2-PRO-DES-C-1080, SDR-2-PRO-DES-C-1040, SDR-2-CON-ST-ZA-6420 FS+4d → SDR-2-CON-ST-ZA-6420 FS+4d |
| 7 | **bedding Works** | 2026-10-14 → 2026-08-20 (-55d) | 2026-11-07 → 2026-09-28 (-40d) |  |  |  |
| SDR-2-CON-ST-ZA-4240 | Sand bedding for GRP Pipes | 2026-10-14 → 2026-08-20 A (-55d) | 2026-11-07 → 2026-09-28 (-40d) | 0% → 50% | 21d → 76d |  |
| 2 | **Pipes Laying** | 2026-11-08 → 2026-08-27 (-73d) | 2026-12-01 → 2026-09-28 (-64d) |  |  |  |
| SDR-2-CON-ST-ZA-4190 | Install ST GRP Pipes | 2026-11-08 → 2026-08-27 A (-73d) | 2026-12-01 → 2026-09-28 (-64d) | 0% → 70% | 21d → 76d | SDR-2-PRO-ST-M-1020, SDR-2-CON-ST-ZA-4240 → SDR-2-CON-ST-ZA-4240 FF, SDR-2-PRO-ST-M-1020 FF |
| 6 | **Testing** | 2026-12-02 → 2026-09-29 (-64d) | 2026-12-26 → 2026-10-22 (-65d) |  |  |  |
| SDR-2-CON-ST-ZA-4230 | Testing ST GRP Pipes | 2026-12-02 → 2026-09-29 (-64d) | 2026-12-26 → 2026-10-22 (-65d) |  | 21d → 76d |  |
| 3 | **Backfilling** | 2026-12-27 → 2026-10-24 (-64d) | 2027-01-19 → 2026-11-16 (-64d) |  |  |  |
| SDR-2-CON-ST-ZA-4200 | Backfilling ST GRP Pipes | 2026-12-27 → 2026-10-24 (-64d) | 2027-01-19 → 2026-11-16 (-64d) |  | 21d → 76d |  |
| 4 | **Manholes** | 2026-07-27 → 2026-07-01 (-26d) | 2027-01-18 → 2026-11-16 (-63d) |  |  |  |
| 1 | **Excavation** | 2026-07-27 → 2026-07-01 (-26d) | 2026-10-12 → 2026-08-31 (-42d) |  |  |  |
| SDR-2-CON-ST-ZA-6990 | Excavation Manholes Section 1 | 2026-07-27 → 2026-07-01 A (-26d) | 2026-08-19 → 2026-08-31 A (+12d) | 0% → 100% | 14d → none |  |
| SDR-2-CON-ST-ZA-6430 | Excavation Manholes Section 2 | 2026-08-20 → 2026-07-13 A (-38d) | 2026-09-13 → 2026-07-20 A (-55d) | 0% → 100% | 14d → none |  |
| SDR-2-CON-ST-ZA-4210 | Excavation Manholes Section 3 | 2026-09-17 → 2026-07-20 A (-59d) | 2026-10-12 → 2026-08-01 A (-72d) | 0% → 100% | 14d → none |  |
| 2 | **bedding Works** | 2026-10-13 → 2026-08-20 (-54d) | 2026-11-05 → 2026-09-28 (-38d) |  |  |  |
| SDR-2-CON-ST-ZA-4250 | Sand bedding for Manholes | 2026-10-13 → 2026-08-20 A (-54d) | 2026-11-05 → 2026-09-28 (-38d) | 0% → 25% | 14d → 78d |  |
| 3 | **Install Manholes** | 2026-11-07 → 2026-08-27 (-72d) | 2026-11-30 → 2026-09-28 (-63d) |  |  |  |
| SDR-2-CON-ST-ZA-4260 | Manholes Installation | 2026-11-07 → 2026-08-27 A (-72d) | 2026-11-30 → 2026-09-28 (-63d) | 0% → 28% | 14d → 78d | SDR-2-CON-ST-ZA-4250 → SDR-2-CON-ST-ZA-4250 FF |
| 4 | **Testing** | 2026-12-01 → 2026-09-29 (-63d) | 2026-12-24 → 2026-10-22 (-63d) |  |  |  |
| SDR-2-CON-ST-ZA-4270 | Testing for Manholes | 2026-12-01 → 2026-09-29 (-63d) | 2026-12-24 → 2026-10-22 (-63d) |  | 24d → 78d |  |
| 5 | **Backfilling** | 2026-12-26 → 2026-10-24 (-63d) | 2027-01-18 → 2026-11-16 (-63d) |  |  |  |
| SDR-2-CON-ST-ZA-4280 | Backfilling for Manholes | 2026-12-26 → 2026-10-24 (-63d) | 2027-01-18 → 2026-11-16 (-63d) |  | 24d → 78d |  |
| 5 | **Catch basin** | 2026-12-01 → 2026-08-16 (-107d) | 2027-04-20 → 2027-03-03 (-48d) |  |  |  |
| 1 | **Excavation** | 2026-12-01 → 2026-08-16 (-107d) | 2027-01-26 → 2026-10-31 (-87d) |  |  |  |
| SDR-2-CON-ST-ZA-6440 | Excavation for Catch basin Section 1 | 2026-12-01 → 2026-08-16 A (-107d) | 2026-12-24 → 2026-09-28 (-87d) | 0% → 50% | 14d → 89d | SDR-2-CON-ST-ZA-4260 → SDR-2-CON-ST-ZA-4260 FF |
| SDR-2-CON-ST-ZA-4220 | Excavation for Catch basin Section 2 | 2027-01-03 → 2026-10-07 (-88d) | 2027-01-26 → 2026-10-31 (-87d) |  | 14d → 89d |  |
| 2 | **bedding Works** | 2027-01-27 → 2026-12-15 (-43d) | 2027-02-20 → 2027-01-07 (-44d) |  |  |  |
| SDR-2-CON-ST-ZA-4290 | Sand Dedding for Catch basin | 2027-01-27 → 2026-12-15 (-43d) | 2027-02-20 → 2027-01-07 (-44d) |  | 14d → 51d | SDR-2-CON-CC-ZG-1620, SDR-2-CON-CC-ZG-1660, SDR-2-CON-ST-ZA-4220 → SDR-2-CON-CC-ZG-1620, SDR-2-CON-ST-ZA-4220 |
| 3 | **Install Catch basin** | 2027-02-21 → 2027-01-09 (-43d) | 2027-03-22 → 2027-02-01 (-49d) |  |  |  |
| SDR-2-CON-ST-ZA-4300 | Install Catch basin | 2027-02-21 → 2027-01-09 (-43d) | 2027-03-22 → 2027-02-01 (-49d) |  | 14d → 51d |  |

| ID | Task | Start | Finish | Complete | Total float | Predecessors |
| --- | --- | --- | --- | --- | --- | --- |
| 4 | **Testing** | 2027-03-29 → 2027-02-08 (-49d) | 2027-04-08 → 2027-02-18 (-49d) |  |  |  |
| SDR-2-CON-ST-ZA-4310 | Testing for Catch basin pipe | 2027-03-29 → 2027-02-08 (-49d) | 2027-04-08 → 2027-02-18 (-49d) |  | 14d → 51d |  |
| 5 | **Backfilling** | 2027-04-10 → 2027-02-20 (-49d) | 2027-04-20 → 2027-03-03 (-48d) |  |  |  |
| SDR-2-CON-ST-ZA-4320 | Backfilling for Catch basin | 2027-04-10 → 2027-02-20 (-49d) | 2027-04-20 → 2027-03-03 (-48d) |  | 14d → 51d |  |
| 14 | **STORM WATER LINE IN ( PH2-A-MCF0 )** | 2026-08-01 → 2026-06-22 (-40d) | 2027-04-19 → 2027-04-04 (-15d) |  |  |  |
| 8 | **Pipes Works** | 2026-08-01 → 2026-06-22 (-40d) | 2027-01-19 → 2026-12-09 (-41d) |  |  |  |
| 1 | **Excavation** | 2026-08-01 → 2026-06-22 (-40d) | 2026-10-13 → 2026-07-13 (-92d) |  |  |  |
| SDR-2-CON-ST-ZA-7000 | Excavation for GRP Pipes Section 1 | 2026-08-01 → 2026-06-22 A (-40d) | 2026-08-24 → 2026-06-30 A (-55d) | 0% → 100% | 0d → none | SDR-2-CON-ST-ZA-6980 SS+4d, SDR-2-PRO-DEL-E-1130, SDR-2-PRO-DEL-E-1050 → SDR-2-CON-ST-ZA-6980 SS+4d, SDR-2-PRO-DEL-E-1050, SDR-2-PRO-DEL-E-1130 SS |
| SDR-2-CON-ST-ZA-6450 | Excavation for GRP Pipes Section 2 | 2026-08-25 → 2026-06-30 A (-56d) | 2026-09-17 → 2026-07-06 A (-73d) | 0% → 100% | 15d → none |  |
| SDR-2-CON-ST-ZA-4330 | Excavation for GRP Pipes Section 3 | 2026-09-19 → 2026-07-06 A (-75d) | 2026-10-13 → 2026-07-13 A (-92d) | 0% → 100% | 15d → none | SDR-2-PRO-ST-E-1110, SDR-2-CON-ST-ZA-6450 → SDR-2-CON-ST-ZA-6450 |
| 7 | **bedding Works** | 2026-10-14 → 2026-09-28 (-16d) | 2026-11-07 → 2026-10-21 (-17d) |  |  |  |
| SDR-2-CON-ST-ZA-4390 | Sand bedding for GRP Pipes | 2026-10-14 → 2026-09-28 (-16d) | 2026-11-07 → 2026-10-21 (-17d) |  | 21d → 56d |  |
| 2 | **Pipes Laying** | 2026-11-08 → 2026-09-10 (-59d) | 2026-12-01 → 2026-10-21 (-41d) |  |  |  |
| SDR-2-CON-ST-ZA-4340 | Install ST GRP Pipes | 2026-11-08 → 2026-09-10 A (-59d) | 2026-12-01 → 2026-10-21 (-41d) | 0% → 50% | 21d → 56d | SDR-2-CON-ST-ZA-4390 → SDR-2-CON-ST-ZA-4390 FF |
| 6 | **Testing** | 2026-12-02 → 2026-10-22 (-41d) | 2026-12-26 → 2026-11-15 (-41d) |  |  |  |
| SDR-2-CON-ST-ZA-4380 | Testing ST GRP Pipes | 2026-12-02 → 2026-10-22 (-41d) | 2026-12-26 → 2026-11-15 (-41d) |  | 21d → 56d |  |
| 3 | **Backfilling** | 2026-12-27 → 2026-11-16 (-41d) | 2027-01-19 → 2026-12-09 (-41d) |  |  |  |
| SDR-2-CON-ST-ZA-4350 | Backfilling ST GRP Pipes | 2026-12-27 → 2026-11-16 (-41d) | 2027-01-19 → 2026-12-09 (-41d) |  | 21d → 56d |  |
| 4 | **Manholes** | 2026-08-01 → 2026-06-30 (-32d) | 2026-12-26 → 2027-01-04 (+9d) |  |  |  |
| 1 | **Excavation** | 2026-08-01 → 2026-06-30 (-32d) | 2026-09-17 → 2026-09-28 (+11d) |  |  |  |
| SDR-2-CON-ST-ZA-6460 | Excavation Manholes Section 1 | 2026-08-01 → 2026-06-30 A (-32d) | 2026-08-24 → 2026-08-31 A (+7d) | 0% → 100% | 14d → none |  |
| SDR-2-CON-ST-ZA-4360 | Excavation Manholes Section 2 | 2026-08-25 → 2026-07-06 A (-50d) | 2026-09-17 → 2026-09-28 (+11d) | 0% → 50% | 14d → 19d |  |
| 2 | **bedding Works** | 2026-09-19 → 2026-09-29 (+10d) | 2026-10-13 → 2026-10-22 (+9d) |  |  |  |
| SDR-2-CON-ST-ZA-4400 | Sand bedding for Manholes | 2026-09-19 → 2026-09-29 (+10d) | 2026-10-13 → 2026-10-22 (+9d) |  | 14d → 19d |  |
| 3 | **Install Manholes** | 2026-10-14 → 2026-10-24 (+10d) | 2026-11-07 → 2026-11-16 (+9d) |  |  |  |
| SDR-2-CON-ST-ZA-4410 | Manholes Installation | 2026-10-14 → 2026-10-24 (+10d) | 2026-11-07 → 2026-11-16 (+9d) |  | 14d → 19d |  |
| 4 | **Testing** | 2026-11-08 → 2026-11-17 (+9d) | 2026-12-01 → 2026-12-10 (+9d) |  |  |  |
| SDR-2-CON-ST-ZA-4420 | Testing for Manholes | 2026-11-08 → 2026-11-17 (+9d) | 2026-12-01 → 2026-12-10 (+9d) |  | 14d → 19d |  |
| 5 | **Backfilling** | 2026-12-02 → 2026-12-12 (+10d) | 2026-12-26 → 2027-01-04 (+9d) |  |  |  |
| SDR-2-CON-ST-ZA-4430 | Backfilling for Manholes | 2026-12-02 → 2026-12-12 (+10d) | 2026-12-26 → 2027-01-04 (+9d) |  | 14d → 19d |  |
| 5 | **Catch basin** | 2026-11-08 → 2026-08-16 (-84d) | 2027-04-19 → 2027-04-04 (-15d) |  |  |  |
| 1 | **Excavation** | 2026-11-08 → 2026-08-16 (-84d) | 2026-12-26 → 2026-12-10 (-16d) |  |  |  |
| SDR-2-CON-ST-ZA-6470 | Excavation for Catch basin Section 1 | 2026-11-08 → 2026-08-16 A (-84d) | 2026-12-01 → 2026-11-16 (-15d) | 0% → 40% | 15d → 28d | SDR-2-CON-ST-ZA-4410 → SDR-2-CON-ST-ZA-4410 FF |
| SDR-2-CON-ST-ZA-4370 | Excavation for Catch basin Section 2 | 2026-12-02 → 2026-11-17 (-15d) | 2026-12-26 → 2026-12-10 (-16d) |  | 15d → 28d |  |
| 2 | **bedding Works** | 2026-12-27 → 2026-12-12 (-15d) | 2027-01-19 → 2027-01-04 (-15d) |  |  |  |
| SDR-2-CON-ST-ZA-4440 | Sand Dedding for Catch basin | 2026-12-27 → 2026-12-12 (-15d) | 2027-01-19 → 2027-01-04 (-15d) |  | 15d → 28d |  |
| 3 | **Install Catch basin** | 2027-01-20 → 2027-01-05 (-15d) | 2027-02-13 → 2027-01-28 (-16d) |  |  |  |
| SDR-2-CON-ST-ZA-4450 | Install Catch basin | 2027-01-20 → 2027-01-05 (-15d) | 2027-02-13 → 2027-01-28 (-16d) |  | 15d → 28d |  |
| 4 | **Testing** | 2027-02-14 → 2027-01-30 (-15d) | 2027-03-15 → 2027-02-23 (-20d) |  |  |  |
| SDR-2-CON-ST-ZA-4460 | Testing for Catch basin pipe | 2027-02-14 → 2027-01-30 (-15d) | 2027-03-15 → 2027-02-23 (-20d) |  | 15d → 28d |  |
| 5 | **Backfilling** | 2027-03-16 → 2027-02-24 (-20d) | 2027-04-19 → 2027-04-04 (-15d) |  |  |  |
| SDR-2-CON-ST-ZA-7010 | Backfilling for Catch basin Section 1 | 2027-03-16 → 2027-02-24 (-20d) | 2027-04-01 → 2027-03-17 (-15d) |  | 15d → 28d |  |
| SDR-2-CON-ST-ZA-4470 | Backfilling for Catch basin Section 2 | 2027-04-03 → 2027-03-18 (-16d) | 2027-04-19 → 2027-04-04 (-15d) |  | 15d → 28d |  |
| 15 | **STORM WATER LINE IN ( PH2-A-MCG0 )** | 2026-08-06 → 2026-07-01 (-36d) | 2027-04-20 → 2027-03-30 (-21d) |  |  |  |
| 8 | **Pipes Works** | 2026-08-06 → 2026-07-01 (-36d) | 2026-12-31 → 2027-01-03 (+3d) |  |  |  |
| 1 | **Excavation** | 2026-08-06 → 2026-07-01 (-36d) | 2026-09-24 → 2026-07-20 (-66d) |  |  |  |
| SDR-2-CON-ST-ZA-6480 | Excavation for GRP Pipes Section 1 | 2026-08-06 → 2026-07-01 A (-36d) | 2026-08-30 → 2026-07-11 A (-50d) | 0% → 100% | 7d → none | SDR-2-CON-ST-ZA-7000 SS+4d, SDR-2-PRO-DEL-E-1030, SDR-2-PRO-DES-E-1020 → SDR-2-CON-ST-ZA-7000 SS+4d, SDR-2-PRO-DES-E-1020 SS |
| SDR-2-CON-ST-ZA-4480 | Excavation for GRP Pipes Section 2 | 2026-08-31 → 2026-07-12 A (-50d) | 2026-09-24 → 2026-07-20 A (-66d) | 0% → 100% | 16d → none |  |
| 7 | **bedding Works** | 2026-09-26 → 2026-09-28 (+2d) | 2026-10-19 → 2026-10-21 (+2d) |  |  |  |
| SDR-2-CON-ST-ZA-4540 | Sand bedding for GRP Pipes | 2026-09-26 → 2026-09-28 (+2d) | 2026-10-19 → 2026-10-21 (+2d) |  | 16d → 24d |  |
| 2 | **Pipes Laying** | 2026-10-20 → 2026-10-22 (+2d) | 2026-11-12 → 2026-11-15 (+3d) |  |  |  |
| SDR-2-CON-ST-ZA-4490 | Install ST GRP Pipes | 2026-10-20 → 2026-10-22 (+2d) | 2026-11-12 → 2026-11-15 (+3d) |  | 16d → 24d |  |
| 6 | **Testing** | 2026-11-14 → 2026-11-16 (+2d) | 2026-12-07 → 2026-12-09 (+2d) |  |  |  |
| SDR-2-CON-ST-ZA-4530 | Testing ST GRP Pipes | 2026-11-14 → 2026-11-16 (+2d) | 2026-12-07 → 2026-12-09 (+2d) |  | 16d → 24d |  |
| 3 | **Backfilling** | 2026-12-08 → 2026-12-10 (+2d) | 2026-12-31 → 2027-01-03 (+3d) |  |  |  |
| SDR-2-CON-ST-ZA-4500 | Backfilling ST GRP Pipes | 2026-12-08 → 2026-12-10 (+2d) | 2026-12-31 → 2027-01-03 (+3d) |  | 16d → 24d |  |
| 4 | **Manholes** | 2026-08-06 → 2026-07-20 (-17d) |  |  |  |  |
| 1 | **Excavation** | 2026-08-06 → 2026-07-20 (-17d) |  |  |  |  |
| SDR-2-CON-ST-ZA-6490 | Excavation Manholes Section 1 | 2026-08-06 → 2026-07-20 A (-17d) | 2026-08-30 → 2026-08-31 A (+1d) | 0% → 100% | 10d → none |  |
| SDR-2-CON-ST-ZA-4510 | Excavation Manholes Section 2 | 2026-09-03 → 2026-07-29 A (-36d) |  | 0% → 50% | 10d → 13d |  |
| 5 | **Catch basin** | 2026-11-17 → 2026-08-16 (-93d) | 2027-04-20 → 2027-03-30 (-21d) |  |  |  |
| 1 | **Excavation** | 2026-11-17 → 2026-08-16 (-93d) | 2027-01-10 → 2026-12-16 (-25d) |  |  |  |
| SDR-2-CON-ST-ZA-6500 | Excavation for Catch basin Section 1 | 2026-11-17 → 2026-08-16 A (-93d) | 2026-12-10 → 2026-11-16 (-24d) | 0% → 40% | 14d → 35d | SDR-2-CON-ST-ZA-4560 → SDR-2-CON-ST-ZA-4560 FF |
| SDR-2-CON-ST-ZA-4520 | Excavation for Catch basin Section 2 | 2026-12-17 → 2026-11-23 (-24d) | 2027-01-10 → 2026-12-16 (-25d) |  | 14d → 35d |  |
| 2 | **bedding Works** | 2027-01-11 → 2026-12-17 (-25d) | 2027-02-03 → 2027-01-10 (-24d) |  |  |  |
| SDR-2-CON-ST-ZA-4590 | Sand Dedding for Catch basin | 2027-01-11 → 2026-12-17 (-25d) | 2027-02-03 → 2027-01-10 (-24d) |  | 14d → 35d |  |
| 3 | **Install Catch basin** | 2027-02-04 → 2027-01-11 (-24d) | 2027-03-01 → 2027-02-03 (-26d) |  |  |  |
| SDR-2-CON-ST-ZA-4600 | Install Catch basin | 2027-02-04 → 2027-01-11 (-24d) | 2027-03-01 → 2027-02-03 (-26d) |  | 14d → 35d |  |
| 4 | **Testing** | 2027-03-02 → 2027-02-04 (-26d) | 2027-03-17 → 2027-02-15 (-30d) |  |  |  |
| SDR-2-CON-ST-ZA-4610 | Testing for Catch basin pipe | 2027-03-02 → 2027-02-04 (-26d) | 2027-03-17 → 2027-02-15 (-30d) |  | 14d → 35d |  |

| ID | Task | Start | Finish | Complete | Total float | Predecessors |
| --- | --- | --- | --- | --- | --- | --- |
| 5 | **Backfilling** | 2027-03-18 → 2027-02-16 (-30d) | 2027-04-20 → 2027-03-30 (-21d) |  |  |  |
| SDR-2-CON-ST-ZA-7020 | Backfilling for Catch basin Section 1 | 2027-03-18 → 2027-02-16 (-30d) | 2027-04-03 → 2027-03-04 (-30d) |  | 14d → 35d |  |
| SDR-2-CON-ST-ZA-4620 | Backfilling for Catch basin Section 2 | 2027-04-04 → 2027-03-14 (-21d) | 2027-04-20 → 2027-03-30 (-21d) |  | 14d → 32d |  |
| 16 | **STORM WATER LINE IN ( PH2-A-MCH0 )** | 2026-08-06 → 2026-07-01 (-36d) | 2027-04-20 → 2027-04-11 (-9d) |  |  |  |
| 8 | **Pipes Works** | 2026-08-06 → 2026-07-01 (-36d) | 2026-12-31 → 2027-01-03 (+3d) |  |  |  |
| 1 | **Excavation** | 2026-08-06 → 2026-07-01 (-36d) | 2026-09-24 → 2026-07-20 (-66d) |  |  |  |
| SDR-2-CON-ST-ZA-6510 | Excavation for GRP Pipes Section 1 | 2026-08-06 → 2026-07-01 A (-36d) | 2026-08-30 → 2026-07-11 A (-50d) | 0% → 100% | 7d → none |  |
| SDR-2-CON-ST-ZA-4630 | Excavation for GRP Pipes Section 2 | 2026-08-31 → 2026-07-12 A (-50d) | 2026-09-24 → 2026-07-20 A (-66d) | 0% → 100% | 7d → none |  |
| 7 | **bedding Works** | 2026-09-26 → 2026-09-28 (+2d) | 2026-10-19 → 2026-10-21 (+2d) |  |  |  |
| SDR-2-CON-ST-ZA-4690 | Sand bedding for GRP Pipes | 2026-09-26 → 2026-09-28 (+2d) | 2026-10-19 → 2026-10-21 (+2d) |  | 16d → 4d |  |
| 2 | **Pipes Laying** | 2026-10-20 → 2026-10-22 (+2d) | 2026-11-12 → 2026-11-15 (+3d) |  |  |  |
| SDR-2-CON-ST-ZA-4640 | Install ST GRP Pipes | 2026-10-20 → 2026-10-22 (+2d) | 2026-11-12 → 2026-11-15 (+3d) |  | 16d → 4d |  |
| 6 | **Testing** | 2026-11-14 → 2026-11-16 (+2d) | 2026-12-07 → 2026-12-09 (+2d) |  |  |  |
| SDR-2-CON-ST-ZA-4680 | Testing ST GRP Pipes | 2026-11-14 → 2026-11-16 (+2d) | 2026-12-07 → 2026-12-09 (+2d) |  | 16d → 4d |  |
| 3 | **Backfilling** | 2026-12-08 → 2026-12-10 (+2d) | 2026-12-31 → 2027-01-03 (+3d) |  |  |  |
| SDR-2-CON-ST-ZA-4650 | Backfilling ST GRP Pipes | 2026-12-08 → 2026-12-10 (+2d) | 2026-12-31 → 2027-01-03 (+3d) |  | 16d → 4d |  |
| 4 | **Manholes** | 2026-08-06 → 2026-07-01 (-36d) |  |  |  |  |
| 1 | **Excavation** | 2026-08-06 → 2026-07-01 (-36d) |  |  |  |  |
| SDR-2-CON-ST-ZA-6520 | Excavation Manholes Section 1 | 2026-08-06 → 2026-07-01 A (-36d) | 2026-08-30 → 2026-08-31 A (+1d) | 0% → 100% | 14d → none |  |
| SDR-2-CON-ST-ZA-6350 | Excavation Manholes Section 2 | 2026-09-03 → 2026-07-13 A (-52d) |  | 0% → 50% | 14d → 24d |  |
| 5 | **Catch basin** | 2026-11-17 → 2026-08-16 (-93d) | 2027-04-20 → 2027-04-11 (-9d) |  |  |  |
| 1 | **Excavation** | 2026-11-17 → 2026-08-16 (-93d) | 2027-01-04 → 2026-12-10 (-25d) |  |  |  |
| SDR-2-CON-ST-ZA-6530 | Excavation for Catch basin Section 1 | 2026-11-17 → 2026-08-16 A (-93d) | 2026-12-10 → 2026-11-16 (-24d) | 0% → 40% | 14d → 35d | SDR-2-CON-ST-ZA-4710 → SDR-2-CON-ST-ZA-4710 FF |
| SDR-2-CON-ST-ZA-4670 | Excavation for Catch basin Section 2 | 2026-12-12 → 2026-11-17 (-25d) | 2027-01-04 → 2026-12-10 (-25d) |  | 14d → 35d |  |
| 2 | **bedding Works** | 2027-01-05 → 2026-12-12 (-24d) | 2027-01-28 → 2027-01-04 (-24d) |  |  |  |
| SDR-2-CON-ST-ZA-4740 | Sand Dedding for Catch basin | 2027-01-05 → 2026-12-12 (-24d) | 2027-01-28 → 2027-01-04 (-24d) |  | 14d → 35d |  |
| 3 | **Install Catch basin** | 2027-02-04 → 2027-01-11 (-24d) | 2027-03-01 → 2027-02-03 (-26d) |  |  |  |
| SDR-2-CON-ST-ZA-4750 | Install Catch basin | 2027-02-04 → 2027-01-11 (-24d) | 2027-03-01 → 2027-02-03 (-26d) |  | 14d → 35d |  |
| 4 | **Testing** | 2027-03-02 → 2027-02-04 (-26d) | 2027-03-17 → 2027-02-15 (-30d) |  |  |  |
| SDR-2-CON-ST-ZA-4760 | Testing for Catch basin pipe | 2027-03-02 → 2027-02-04 (-26d) | 2027-03-17 → 2027-02-15 (-30d) |  | 14d → 35d |  |
| 5 | **Backfilling** | 2027-03-18 → 2027-02-16 (-30d) | 2027-04-20 → 2027-04-11 (-9d) |  |  |  |
| SDR-2-CON-ST-ZA-7030 | Backfilling for Catch basin Section 1 | 2027-03-18 → 2027-02-16 (-30d) | 2027-04-03 → 2027-03-04 (-30d) |  | 14d → 35d |  |
| SDR-2-CON-ST-ZA-4770 | Backfilling for Catch basin Section 2 | 2027-04-04 → 2027-03-25 (-10d) | 2027-04-20 → 2027-04-11 (-9d) |  | 14d → 22d |  |
| 1 | **STORM WATER LINE IN ( PH2-A-MCA0 )** | 2026-08-05 → 2026-06-15 (-51d) | 2027-04-18 → 2027-03-29 (-20d) |  |  |  |
| 8 | **Pipes Works** | 2026-08-05 → 2026-06-22 (-44d) | 2027-01-09 → 2027-01-05 (-4d) |  |  |  |
| 1 | **Excavation** | 2026-08-05 → 2026-06-22 (-44d) | 2026-09-22 → 2026-07-20 (-64d) |  |  |  |
| SDR-2-CON-ST-ZA-6540 | Excavation for GRP Pipes Section 1 | 2026-08-05 → 2026-06-22 A (-44d) | 2026-08-29 → 2026-06-29 A (-61d) | 0% → 100% | 5d → none |  |
| SDR-2-CON-ST-ZA-4780 | Excavation for GRP Pipes Section 2 | 2026-08-30 → 2026-07-01 A (-60d) | 2026-09-22 → 2026-07-20 A (-64d) | 0% → 100% | 5d → none |  |
| 7 | **bedding Works** | 2026-09-24 → 2026-09-28 (+4d) | 2026-10-18 → 2026-10-21 (+3d) |  |  |  |
| SDR-2-CON-ST-ZA-4840 | Sand bedding for GRP Pipes | 2026-09-24 → 2026-09-28 (+4d) | 2026-10-18 → 2026-10-21 (+3d) |  | 20d → 23d |  |
| 2 | **Pipes Laying** | 2026-10-19 → 2026-10-15 (-4d) | 2026-11-11 → 2026-11-08 (-3d) |  |  |  |
| SDR-2-CON-ST-ZA-4790 | Install ST GRP Pipes | 2026-10-19 → 2026-10-15 (-4d) | 2026-11-11 → 2026-11-08 (-3d) |  | 20d → 23d | SDR-2-CON-ST-ZA-4840 → SDR-2-CON-ST-ZA-4840 SS+15d |
| 6 | **Testing** | 2026-11-12 → 2026-11-09 (-3d) | 2026-12-06 → 2026-12-02 (-4d) |  |  |  |
| SDR-2-CON-ST-ZA-4830 | Testing ST GRP Pipes | 2026-11-12 → 2026-11-09 (-3d) | 2026-12-06 → 2026-12-02 (-4d) |  | 20d → 23d |  |
| 3 | **Backfilling** | 2026-12-16 → 2026-12-13 (-3d) | 2027-01-09 → 2027-01-05 (-4d) |  |  |  |
| SDR-2-CON-ST-ZA-4800 | Backfilling ST GRP Pipes | 2026-12-16 → 2026-12-13 (-3d) | 2027-01-09 → 2027-01-05 (-4d) |  | 20d → 23d |  |
| 4 | **Manholes** | 2026-08-05 → 2026-06-15 (-51d) | 2026-12-30 → 2027-01-04 (+5d) |  |  |  |
| 1 | **Excavation** | 2026-08-05 → 2026-06-15 (-51d) | 2026-09-22 → 2026-09-28 (+6d) |  |  |  |
| SDR-2-CON-ST-ZA-6550 | Excavation Manholes Section 1 | 2026-08-05 → 2026-06-15 A (-51d) | 2026-08-29 → 2026-08-31 A (+2d) | 0% → 100% | 14d → none |  |
| SDR-2-CON-ST-ZA-4810 | Excavation Manholes Section 2 | 2026-08-30 → 2026-07-14 A (-47d) | 2026-09-22 → 2026-09-28 (+6d) | 0% → 50% | 14d → 13d |  |
| 2 | **bedding Works** | 2026-09-24 → 2026-09-29 (+5d) | 2026-10-18 → 2026-10-22 (+4d) |  |  |  |
| SDR-2-CON-ST-ZA-4850 | Sand bedding for Manholes | 2026-09-24 → 2026-09-29 (+5d) | 2026-10-18 → 2026-10-22 (+4d) |  | 14d → 13d |  |
| 3 | **Install Manholes** | 2026-10-19 → 2026-10-24 (+5d) | 2026-11-11 → 2026-11-16 (+5d) |  |  |  |
| SDR-2-CON-ST-ZA-4860 | Manholes Installation | 2026-10-19 → 2026-10-24 (+5d) | 2026-11-11 → 2026-11-16 (+5d) |  | 14d → 13d |  |
| 4 | **Testing** | 2026-11-12 → 2026-11-17 (+5d) | 2026-12-06 → 2026-12-10 (+4d) |  |  |  |
| SDR-2-CON-ST-ZA-4870 | Testing for Manholes | 2026-11-12 → 2026-11-17 (+5d) | 2026-12-06 → 2026-12-10 (+4d) |  | 14d → 13d |  |
| 5 | **Backfilling** | 2026-12-07 → 2026-12-12 (+5d) | 2026-12-30 → 2027-01-04 (+5d) |  |  |  |
| SDR-2-CON-ST-ZA-4880 | Backfilling for Manholes | 2026-12-07 → 2026-12-12 (+5d) | 2026-12-30 → 2027-01-04 (+5d) |  | 14d → 13d |  |
| 5 | **Catch basin** | 2026-11-12 → 2026-08-16 (-88d) | 2027-04-18 → 2027-03-29 (-20d) |  |  |  |
| 1 | **Excavation** | 2026-11-12 → 2026-08-16 (-88d) | 2027-01-06 → 2026-12-17 (-20d) |  |  |  |
| SDR-2-CON-ST-ZA-6560 | Excavation for Catch basin Section 1 | 2026-11-12 → 2026-08-16 A (-88d) | 2026-12-06 → 2026-11-16 (-20d) |  | 16d → 29d | SDR-2-CON-ST-ZA-4860 → SDR-2-CON-ST-ZA-4860 FF |
| SDR-2-CON-ST-ZA-4820 | Excavation for Catch basin Section 2 | 2026-12-14 → 2026-11-24 (-20d) | 2027-01-06 → 2026-12-17 (-20d) |  | 16d → 32d |  |
| 2 | **bedding Works** | 2027-01-07 → 2026-12-19 (-19d) | 2027-01-31 → 2027-01-11 (-20d) |  |  |  |
| SDR-2-CON-ST-ZA-4890 | Sand Dedding for Catch basin | 2027-01-07 → 2026-12-19 (-19d) | 2027-01-31 → 2027-01-11 (-20d) |  | 16d → 32d |  |
| 3 | **Install Catch basin** | 2027-02-01 → 2027-01-12 (-20d) | 2027-02-25 → 2027-02-04 (-21d) |  |  |  |
| SDR-2-CON-ST-ZA-4900 | Install Catch basin | 2027-02-01 → 2027-01-12 (-20d) | 2027-02-25 → 2027-02-04 (-21d) |  | 16d → 32d |  |
| 4 | **Testing** | 2027-02-27 → 2027-02-06 (-21d) | 2027-03-16 → 2027-02-18 (-26d) |  |  |  |
| SDR-2-CON-ST-ZA-4910 | Testing for Catch basin pipe | 2027-02-27 → 2027-02-06 (-21d) | 2027-03-16 → 2027-02-18 (-26d) |  | 16d → 32d |  |
| 5 | **Backfilling** | 2027-03-17 → 2027-02-20 (-25d) | 2027-04-18 → 2027-03-29 (-20d) |  |  |  |
| SDR-2-CON-ST-ZA-7040 | Backfilling for Catch basin Section 1 | 2027-03-17 → 2027-02-20 (-25d) | 2027-04-01 → 2027-03-08 (-24d) |  | 16d → 32d |  |

| ID | Task | Start | Finish | Complete | Total float | Predecessors |
| --- | --- | --- | --- | --- | --- | --- |
| SDR-2-CON-ST-ZA-4920 | Backfilling for Catch basin Section 2 | 2027-04-03 → 2027-03-14 (-20d) | 2027-04-18 → 2027-03-29 (-20d) |  | 16d → 32d |  |
| 17 | **STORM WATER LINE IN From MH - A2 / 2 TO STA-A2/10** | 2026-08-10 → 2026-07-01 (-40d) |  |  |  |  |
| 8 | **Pipes Works** | 2026-08-10 → 2026-07-01 (-40d) | 2027-01-04 → 2027-01-03 (-1d) |  |  |  |
| 1 | **Excavation** | 2026-08-10 → 2026-07-01 (-40d) | 2026-09-28 → 2026-08-05 (-54d) |  |  |  |
| SDR-2-CON-ST-ZA-6570 | Excavation for GRP Pipes Section 1 | 2026-08-10 → 2026-07-01 A (-40d) | 2026-09-02 → 2026-07-20 A (-44d) | 0% → 100% | 8d → none |  |
| SDR-2-CON-ST-ZA-4930 | Excavation for GRP Pipes Section 2 | 2026-09-03 → 2026-07-21 A (-44d) | 2026-09-28 → 2026-08-05 A (-54d) | 0% → 100% | 24d → none |  |
| 7 | **bedding Works** | 2026-09-29 → 2026-09-28 (-1d) | 2026-10-22 → 2026-10-21 (-1d) |  |  |  |
| SDR-2-CON-ST-ZA-4990 | Sand bedding for GRP Pipes | 2026-09-29 → 2026-09-28 (-1d) | 2026-10-22 → 2026-10-21 (-1d) |  | 24d → 25d |  |
| 2 | **Pipes Laying** | 2026-10-24 → 2026-10-22 (-2d) | 2026-11-16 → 2026-11-15 (-1d) |  |  |  |
| SDR-2-CON-ST-ZA-4940 | Install ST GRP Pipes | 2026-10-24 → 2026-10-22 (-2d) | 2026-11-16 → 2026-11-15 (-1d) |  | 24d → 25d |  |
| 6 | **Testing** | 2026-11-17 → 2026-11-16 (-1d) | 2026-12-10 → 2026-12-09 (-1d) |  |  |  |
| SDR-2-CON-ST-ZA-4980 | Testing ST GRP Pipes | 2026-11-17 → 2026-11-16 (-1d) | 2026-12-10 → 2026-12-09 (-1d) |  | 24d → 25d |  |
| 3 | **Backfilling** | 2026-12-12 → 2026-12-10 (-2d) | 2027-01-04 → 2027-01-03 (-1d) |  |  |  |
| SDR-2-CON-ST-ZA-4950 | Backfilling ST GRP Pipes | 2026-12-12 → 2026-12-10 (-2d) | 2027-01-04 → 2027-01-03 (-1d) |  | 24d → 25d |  |
| 4 | **Manholes** | 2026-08-10 → 2026-07-20 (-21d) |  |  |  |  |
| 1 | **Excavation** | 2026-08-10 → 2026-07-20 (-21d) |  |  |  |  |
| SDR-2-CON-ST-ZA-6580 | Excavation Manholes Section 1 | 2026-08-10 → 2026-07-20 A (-21d) | 2026-09-02 → 2026-07-30 A (-34d) | 0% → 100% | 24d → none |  |
| SDR-2-CON-ST-ZA-4960 | Excavation Manholes Section 2 | 2026-09-03 → 2026-07-30 A (-35d) |  | 0% → 50% | 24d → 5d |  |
| 18 | **STORM WATER LINE From STA-A2/10 TO STA-A2/1** | 2026-08-15 → 2026-07-21 (-25d) | 2027-04-19 → 2027-05-01 (+12d) |  |  |  |
| 8 | **Pipes Works** | 2026-08-15 → 2026-07-21 (-25d) | 2027-01-09 → 2027-01-03 (-6d) |  |  |  |
| 1 | **Excavation** | 2026-08-15 → 2026-07-21 (-25d) | 2026-10-03 → 2026-08-16 (-48d) |  |  |  |
| SDR-2-CON-ST-ZA-6600 | Excavation for GRP Pipes Section 1 | 2026-08-15 → 2026-07-21 A (-25d) | 2026-09-07 → 2026-08-01 A (-37d) | 0% → 100% | 8d → none |  |
| SDR-2-CON-ST-ZA-5080 | Excavation for GRP Pipes Section 2 | 2026-09-08 → 2026-08-12 A (-27d) | 2026-10-03 → 2026-08-16 A (-48d) | 0% → 100% | 9d → none |  |
| 7 | **bedding Works** | 2026-10-04 → 2026-09-28 (-6d) | 2026-10-27 → 2026-10-21 (-6d) |  |  |  |
| SDR-2-CON-ST-ZA-5140 | Sand bedding for GRP Pipes | 2026-10-04 → 2026-09-28 (-6d) | 2026-10-27 → 2026-10-21 (-6d) |  | 9d → 4d |  |
| 2 | **Pipes Laying** | 2026-10-28 → 2026-10-22 (-6d) | 2026-11-21 → 2026-11-15 (-6d) |  |  |  |
| SDR-2-CON-ST-ZA-5090 | Install ST GRP Pipes | 2026-10-28 → 2026-10-22 (-6d) | 2026-11-21 → 2026-11-15 (-6d) |  | 9d → 4d |  |
| 6 | **Testing** | 2026-11-22 → 2026-11-16 (-6d) | 2026-12-15 → 2026-12-09 (-6d) |  |  |  |
| SDR-2-CON-ST-ZA-5130 | Testing ST GRP Pipes | 2026-11-22 → 2026-11-16 (-6d) | 2026-12-15 → 2026-12-09 (-6d) |  | 9d → 4d |  |
| 3 | **Backfilling** | 2026-12-16 → 2026-12-10 (-6d) | 2027-01-09 → 2027-01-03 (-6d) |  |  |  |
| SDR-2-CON-ST-ZA-5100 | Backfilling ST GRP Pipes | 2026-12-16 → 2026-12-10 (-6d) | 2027-01-09 → 2027-01-03 (-6d) |  | 9d → 4d |  |
| 4 | **Manholes** | 2026-08-15 → 2026-09-28 (+44d) | 2027-01-09 → 2027-02-21 (+43d) |  |  |  |
| 1 | **Excavation** | 2026-08-15 → 2026-09-28 (+44d) | 2026-10-03 → 2026-11-15 (+43d) |  |  |  |
| SDR-2-CON-ST-ZA-6610 | Excavation Manholes Section 1 | 2026-08-15 → 2026-09-28 (+44d) | 2026-09-07 → 2026-10-21 (+44d) |  | 8d → 9d |  |
| SDR-2-CON-ST-ZA-5110 | Excavation Manholes Section 2 | 2026-09-08 → 2026-10-22 (+44d) | 2026-10-03 → 2026-11-15 (+43d) |  | 8d → 9d |  |
| 2 | **bedding Works** | 2026-10-04 → 2026-11-16 (+43d) | 2026-10-27 → 2026-12-09 (+43d) |  |  |  |
| SDR-2-CON-ST-ZA-5150 | Sand bedding for Manholes | 2026-10-04 → 2026-11-16 (+43d) | 2026-10-27 → 2026-12-09 (+43d) |  | 8d → 9d |  |
| 3 | **Install Manholes** | 2026-10-28 → 2026-12-10 (+43d) | 2026-11-21 → 2027-01-03 (+43d) |  |  |  |
| SDR-2-CON-ST-ZA-5160 | Manholes Installation | 2026-10-28 → 2026-12-10 (+43d) | 2026-11-21 → 2027-01-03 (+43d) |  | 8d → 9d |  |
| 4 | **Testing** | 2026-11-22 → 2027-01-04 (+43d) | 2026-12-15 → 2027-01-27 (+43d) |  |  |  |
| SDR-2-CON-ST-ZA-5170 | Testing for Manholes | 2026-11-22 → 2027-01-04 (+43d) | 2026-12-15 → 2027-01-27 (+43d) |  | 8d → 9d |  |
| 5 | **Backfilling** | 2026-12-16 → 2027-01-28 (+43d) | 2027-01-09 → 2027-02-21 (+43d) |  |  |  |
| SDR-2-CON-ST-ZA-5180 | Backfilling for Manholes | 2026-12-16 → 2027-01-28 (+43d) | 2027-01-09 → 2027-02-21 (+43d) |  | 8d → 9d |  |
| 5 | **Catch basin** | 2026-11-22 → 2026-12-12 (+20d) | 2027-04-19 → 2027-05-01 (+12d) |  |  |  |
| 1 | **Excavation** | 2026-11-22 → 2026-12-12 (+20d) | 2027-01-09 → 2027-01-28 (+19d) |  |  |  |
| SDR-2-CON-ST-ZA-6620 | Excavation for Catch basin Section 1 | 2026-11-22 → 2026-12-12 (+20d) | 2026-12-15 → 2027-01-04 (+20d) |  | 15d → 5d | SDR-2-CON-ST-ZA-5160 → SDR-2-CON-ST-ZA-6590 |
| SDR-2-CON-ST-ZA-5120 | Excavation for Catch basin Section 2 | 2026-12-16 → 2027-01-05 (+20d) | 2027-01-09 → 2027-01-28 (+19d) |  | 15d → 5d |  |
| 2 | **bedding Works** | 2027-01-10 → 2027-01-30 (+20d) | 2027-02-02 → 2027-02-23 (+21d) |  |  |  |
| SDR-2-CON-ST-ZA-5190 | Sand Dedding for Catch basin | 2027-01-10 → 2027-01-30 (+20d) | 2027-02-02 → 2027-02-23 (+21d) |  | 15d → 5d |  |
| 3 | **Install Catch basin** | 2027-02-03 → 2027-02-24 (+21d) | 2027-02-28 → 2027-03-24 (+24d) |  |  |  |
| SDR-2-CON-ST-ZA-5200 | Install Catch basin | 2027-02-03 → 2027-02-24 (+21d) | 2027-02-28 → 2027-03-24 (+24d) |  | 15d → 5d |  |
| 4 | **Testing** | 2027-03-01 → 2027-03-25 (+24d) | 2027-03-18 → 2027-04-07 (+20d) |  |  |  |
| SDR-2-CON-ST-ZA-5210 | Testing for Catch basin pipe | 2027-03-01 → 2027-03-25 (+24d) | 2027-03-18 → 2027-04-07 (+20d) |  | 15d → 5d |  |
| 5 | **Backfilling** | 2027-03-20 → 2027-04-08 (+19d) | 2027-04-19 → 2027-05-01 (+12d) |  |  |  |
| SDR-2-CON-ST-ZA-7060 | Backfilling for Catch basin Section 1 | 2027-03-20 → 2027-04-08 (+19d) | 2027-04-03 → 2027-04-22 (+19d) |  | 15d → 5d |  |
| SDR-2-CON-ST-ZA-5220 | Backfilling for Catch basin Section 2 | 2027-04-04 → 2027-04-15 (+11d) | 2027-04-19 → 2027-05-01 (+12d) |  | 15d → 5d | SDR-2-CON-ST-ZA-7060 → SDR-2-CON-ST-ZA-7060 SS+6d |
| 19 | **STORM WATER LINE From IP A7 To Pond A** | 2026-08-19 → 2026-08-12 (-7d) | 2027-04-15 → 2027-04-07 (-8d) |  |  |  |
| 8 | **Pipes Works** | 2026-08-19 → 2026-08-12 (-7d) | 2027-01-17 → 2027-01-04 (-13d) |  |  |  |
| 1 | **Excavation** | 2026-08-19 → 2026-08-12 (-7d) | 2026-10-11 → 2026-09-28 (-13d) |  |  |  |
| SDR-2-CON-ST-ZA-5830 | Excavation for GRP Pipes Section 2 | 2026-09-16 → 2026-08-12 A (-35d) | 2026-10-11 → 2026-09-28 (-13d) | 0% → 90% | 19d → 30d | SDR-2-CON-ST-ZA-6630 FS+3d → SDR-2-CON-ST-ZA-6630 FF |
| SDR-2-CON-ST-ZA-6630 | Excavation for GRP Pipes Section 1 | 2026-08-19 → 2026-08-12 A (-7d) | 2026-09-12 → 2026-09-28 (+16d) | 0% → 90% | 18d → 25d |  |
| 7 | **bedding Works** | 2026-10-12 → 2026-09-29 (-13d) | 2026-11-04 → 2026-10-22 (-13d) |  |  |  |
| SDR-2-CON-ST-ZA-5890 | Sand bedding for GRP Pipes | 2026-10-12 → 2026-09-29 (-13d) | 2026-11-04 → 2026-10-22 (-13d) |  | 19d → 30d |  |
| 2 | **Pipes Laying** | 2026-11-05 → 2026-10-24 (-12d) | 2026-11-29 → 2026-11-16 (-13d) |  |  |  |
| SDR-2-CON-ST-ZA-5840 | Install ST GRP Pipes | 2026-11-05 → 2026-10-24 (-12d) | 2026-11-29 → 2026-11-16 (-13d) |  | 19d → 30d |  |
| 6 | **Testing** | 2026-11-30 → 2026-11-17 (-13d) | 2026-12-23 → 2026-12-10 (-13d) |  |  |  |
| SDR-2-CON-ST-ZA-5880 | Testing ST GRP Pipes | 2026-11-30 → 2026-11-17 (-13d) | 2026-12-23 → 2026-12-10 (-13d) |  | 19d → 30d |  |
| 3 | **Backfilling** | 2026-12-24 → 2026-12-12 (-12d) | 2027-01-17 → 2027-01-04 (-13d) |  |  |  |
| SDR-2-CON-ST-ZA-5850 | Backfilling ST GRP Pipes | 2026-12-24 → 2026-12-12 (-12d) | 2027-01-17 → 2027-01-04 (-13d) |  | 19d → 30d |  |
| 4 | **Manholes** | 2026-08-19 → 2026-09-28 (+40d) | 2027-01-17 → 2027-02-25 (+39d) |  |  |  |

| ID | Task | Start | Finish | Complete | Total float | Predecessors |
| --- | --- | --- | --- | --- | --- | --- |
| 1 | **Excavation** | 2026-08-19 → 2026-09-28 (+40d) | 2026-10-11 → 2026-11-18 (+38d) |  |  |  |
| SDR-2-CON-ST-ZA-6640 | Excavation Manholes Section 1 | 2026-08-19 → 2026-09-28 (+40d) | 2026-09-12 → 2026-10-21 (+39d) |  | 18d → 25d |  |
| SDR-2-CON-ST-ZA-5860 | Excavation Manholes Section 2 | 2026-09-16 → 2026-10-26 (+40d) | 2026-10-11 → 2026-11-18 (+38d) |  | 18d → 25d |  |
| 2 | **bedding Works** | 2026-10-12 → 2026-11-19 (+38d) | 2026-11-04 → 2026-12-13 (+39d) |  |  |  |
| SDR-2-CON-ST-ZA-5900 | Sand bedding for Manholes | 2026-10-12 → 2026-11-19 (+38d) | 2026-11-04 → 2026-12-13 (+39d) |  | 18d → 25d |  |
| 3 | **Install Manholes** | 2026-11-05 → 2026-12-14 (+39d) | 2026-11-29 → 2027-01-06 (+38d) |  |  |  |
| SDR-2-CON-ST-ZA-5910 | Manholes Installation | 2026-11-05 → 2026-12-14 (+39d) | 2026-11-29 → 2027-01-06 (+38d) |  | 18d → 25d |  |
| 4 | **Testing** | 2026-11-30 → 2027-01-07 (+38d) | 2026-12-23 → 2027-01-31 (+39d) |  |  |  |
| SDR-2-CON-ST-ZA-5920 | Testing for Manholes | 2026-11-30 → 2027-01-07 (+38d) | 2026-12-23 → 2027-01-31 (+39d) |  | 19d → 25d |  |
| 5 | **Backfilling** | 2026-12-24 → 2027-02-01 (+39d) | 2027-01-17 → 2027-02-25 (+39d) |  |  |  |
| SDR-2-CON-ST-ZA-5930 | Backfilling for Manholes | 2026-12-24 → 2027-02-01 (+39d) | 2027-01-17 → 2027-02-25 (+39d) |  | 19d → 25d |  |
| 5 | **Catch basin** | 2026-11-30 → 2026-11-17 (-13d) | 2027-04-15 → 2027-04-07 (-8d) |  |  |  |
| 1 | **Excavation** | 2026-11-30 → 2026-11-17 (-13d) | 2027-01-17 → 2027-01-04 (-13d) |  |  |  |
| SDR-2-CON-ST-ZA-6650 | Excavation for Catch basin Section 1 | 2026-11-30 → 2026-11-17 (-13d) | 2026-12-23 → 2026-12-10 (-13d) |  | 18d → 29d | SDR-2-CON-ST-ZA-5910 → SDR-2-CON-ST-ZA-6560 |
| SDR-2-CON-ST-ZA-5870 | Excavation for Catch basin Section 2 | 2026-12-24 → 2026-12-12 (-12d) | 2027-01-17 → 2027-01-04 (-13d) |  | 18d → 29d |  |
| 2 | **bedding Works** | 2027-01-18 → 2027-01-05 (-13d) | 2027-02-10 → 2027-01-28 (-13d) |  |  |  |
| SDR-2-CON-ST-ZA-5940 | Sand Dedding for Catch basin | 2027-01-18 → 2027-01-05 (-13d) | 2027-02-10 → 2027-01-28 (-13d) |  | 18d → 29d |  |
| 3 | **Install Catch basin** | 2027-02-11 → 2027-01-30 (-12d) | 2027-03-08 → 2027-02-23 (-13d) |  |  |  |
| SDR-2-CON-ST-ZA-5950 | Install Catch basin | 2027-02-11 → 2027-01-30 (-12d) | 2027-03-08 → 2027-02-23 (-13d) |  | 18d → 29d |  |
| 4 | **Testing** | 2027-03-14 → 2027-02-24 (-18d) | 2027-03-22 → 2027-03-04 (-18d) |  |  |  |
| SDR-2-CON-ST-ZA-5960 | Testing for Catch basin pipe | 2027-03-14 → 2027-02-24 (-18d) | 2027-03-22 → 2027-03-04 (-18d) |  | 18d → 29d |  |
| 5 | **Backfilling** | 2027-03-23 → 2027-03-15 (-8d) | 2027-04-15 → 2027-04-07 (-8d) |  |  |  |
| SDR-2-CON-ST-ZA-5970 | Backfilling for Catch basin | 2027-03-23 → 2027-03-15 (-8d) | 2027-04-15 → 2027-04-07 (-8d) |  | 18d → 25d |  |
| 2 | **Concrete Box culverts** | 2026-07-13 → 2026-07-01 (-12d) | 2026-11-05 → 2026-11-24 (+19d) |  |  |  |
| 6 | **For Pond A** | 2026-09-08 → 2026-07-01 (-69d) | 2026-10-24 → 2026-10-21 (-3d) |  |  |  |
| 1 | **Excavation** | 2026-09-08 → 2026-07-01 (-69d) | 2026-09-19 → 2026-07-15 (-66d) |  |  |  |
| SDR-2-CON-ST-ZA-3270 | Excavation for Box Culvert. | 2026-09-08 → 2026-07-01 A (-69d) | 2026-09-19 → 2026-07-15 A (-66d) | 0% → 100% | 12d → none |  |
| 2 | **Backfilling with common / suitable excavated material** | 2026-09-20 → 2026-07-02 (-80d) | 2026-09-29 → 2026-07-20 (-71d) |  |  |  |
| SDR-2-CON-ST-ZA-3280 | Backfilling with common / suitable excavated material or with suitable imported material | 2026-09-20 → 2026-07-02 A (-80d) | 2026-09-29 → 2026-07-20 A (-71d) | 0% → 100% | 12d → none |  |
| 3 | **Plain Concrete** | 2026-09-30 → 2026-09-28 (-2d) | 2026-10-06 → 2026-10-04 (-2d) |  |  |  |
| SDR-2-CON-ST-ZA-3290 | Plain Concrete for box culvert | 2026-09-30 → 2026-09-28 (-2d) | 2026-10-06 → 2026-10-04 (-2d) |  | 12d → 26d |  |
| 4 | **Steel Reinforcement** | 2026-10-07 → 2026-10-05 (-2d) | 2026-10-15 → 2026-10-13 (-2d) |  |  |  |
| SDR-2-CON-ST-ZA-3300 | Steel Reinforcement for box culverts | 2026-10-07 → 2026-10-05 (-2d) | 2026-10-15 → 2026-10-13 (-2d) |  | 12d → 26d |  |
| 5 | **Reinforced Concrete** | 2026-10-17 → 2026-10-14 (-3d) | 2026-10-24 → 2026-10-21 (-3d) |  |  |  |
| SDR-2-CON-ST-ZA-3310 | Reinforced Concrete for box culvert | 2026-10-17 → 2026-10-14 (-3d) | 2026-10-24 → 2026-10-21 (-3d) |  | 12d → 26d |  |
| 7 | **For Pond B** | 2026-07-13 → 2026-07-01 (-12d) | 2026-08-26 → 2026-10-31 (+66d) |  |  |  |
| 1 | **Excavation** | 2026-07-13 → 2026-07-01 (-12d) | 2026-07-23 → 2026-07-20 (-3d) |  |  |  |
| SDR-2-CON-ST-ZA-6250 | Excavation for Box Culvert. | 2026-07-13 → 2026-07-01 A (-12d) | 2026-07-23 → 2026-07-20 A (-3d) | 0% → 100% | 12d → none | SDR-2-CON-RW-ZA-2870, SDR-2-PRO-ST-E-1010 FF → SDR-2-CON-RW-ZA-2870 |
| 2 | **Backfilling with common / suitable excavated material** | 2026-07-25 → 2026-09-28 (+65d) | 2026-08-02 → 2026-10-06 (+65d) |  |  |  |
| SDR-2-CON-ST-ZA-6260 | Backfilling with common / suitable excavated material or with suitable imported material | 2026-07-25 → 2026-09-28 (+65d) | 2026-08-02 → 2026-10-06 (+65d) |  | 12d → 16d |  |
| 3 | **Plain Concrete** | 2026-08-03 → 2026-10-07 (+65d) | 2026-08-09 → 2026-10-13 (+65d) |  |  |  |
| SDR-2-CON-ST-ZA-6270 | Plain Concrete for box culvert | 2026-08-03 → 2026-10-07 (+65d) | 2026-08-09 → 2026-10-13 (+65d) |  | 12d → 16d |  |
| 4 | **Steel Reinforcement** | 2026-08-10 → 2026-10-14 (+65d) | 2026-08-18 → 2026-10-22 (+65d) |  |  |  |
| SDR-2-CON-ST-ZA-6280 | Steel Reinforcement for box culverts | 2026-08-10 → 2026-10-14 (+65d) | 2026-08-18 → 2026-10-22 (+65d) |  | 12d → 16d |  |
| 5 | **Reinforced Concrete** | 2026-08-19 → 2026-10-24 (+66d) | 2026-08-26 → 2026-10-31 (+66d) |  |  |  |
| SDR-2-CON-ST-ZA-6290 | Reinforced Concrete for box culvert | 2026-08-19 → 2026-10-24 (+66d) | 2026-08-26 → 2026-10-31 (+66d) |  | 18d → 16d |  |
| 8 | **For Pond C** | 2026-08-06 → 2026-10-01 (+56d) | 2026-11-05 → 2026-11-24 (+19d) |  |  |  |
| 1 | **Excavation** | 2026-08-06 → 2026-10-01 (+56d) | 2026-08-17 → 2026-10-12 (+56d) |  |  |  |
| SDR-2-CON-ST-ZA-6300 | Excavation for Box Culvert. | 2026-08-06 → 2026-10-01 (+56d) | 2026-08-17 → 2026-10-12 (+56d) |  | 23d → 8d |  |
| 2 | **Backfilling with common / suitable excavated material** | 2026-08-18 → 2026-10-13 (+56d) | 2026-08-26 → 2026-10-21 (+56d) |  |  |  |
| SDR-2-CON-ST-ZA-6310 | Backfilling with common / suitable excavated material or with suitable imported material | 2026-08-18 → 2026-10-13 (+56d) | 2026-08-26 → 2026-10-21 (+56d) |  | 23d → 8d |  |
| 3 | **Plain Concrete** | 2026-08-27 → 2026-10-22 (+56d) | 2026-09-02 → 2026-10-28 (+56d) |  |  |  |
| SDR-2-CON-ST-ZA-6320 | Plain Concrete for box culvert | 2026-08-27 → 2026-10-22 (+56d) | 2026-09-02 → 2026-10-28 (+56d) |  | 23d → 8d |  |
| 4 | **Steel Reinforcement** | 2026-09-03 → 2026-10-29 (+56d) | 2026-09-12 → 2026-11-07 (+56d) |  |  |  |
| SDR-2-CON-ST-ZA-6330 | Steel Reinforcement for box culverts | 2026-09-03 → 2026-10-29 (+56d) | 2026-09-12 → 2026-11-07 (+56d) |  | 23d → 8d |  |
| 5 | **Reinforced Concrete** | 2026-10-29 → 2026-11-17 (+19d) | 2026-11-05 → 2026-11-24 (+19d) |  |  |  |
| SDR-2-CON-ST-ZA-6340 | Reinforced Concrete for box culvert | 2026-10-29 → 2026-11-17 (+19d) | 2026-11-05 → 2026-11-24 (+19d) |  | 21d → 8d |  |
| 3 | **Drainage works for ponds and open canals** | 2026-03-30 → 2026-03-24 (-6d) | 2027-03-03 → 2027-03-23 (+20d) |  |  |  |
| 7 | **Pond A** | 2026-03-30 → 2026-03-24 (-6d) | 2026-11-28 → 2026-12-16 (+18d) |  |  |  |
| 2 | **Access road for Storm water Ponds** | 2026-03-30 → 2026-03-24 (-6d) | 2026-04-16 → 2026-03-30 (-17d) |  |  |  |
| SDR-2-CON-ST-ZA-6140 | Embankments with common / suitable excavated material | 2026-03-30 → 2026-03-24 A (-6d) | 2026-04-16 → 2026-03-30 A (-17d) | 0% → 100% | 17d → none |  |
| 1 | **Excavation** | 2026-04-18 → 2026-03-26 (-23d) | 2026-07-23 → 2026-06-22 (-31d) |  |  |  |
| SDR-2-CON-ST-ZA-6660 | Excavation for cutting material Section 1 | 2026-04-18 → 2026-03-26 A (-23d) | 2026-05-10 → 2026-05-02 A (-8d) | 0% → 100% | 25d → none |  |
| SDR-2-CON-ST-ZA-6670 | Excavation for cutting material Section 2 | 2026-05-11 → 2026-05-03 A (-8d) | 2026-06-07 → 2026-05-24 A (-14d) | 0% → 100% | 25d → none |  |
| SDR-2-CON-ST-ZA-6680 | Excavation for cutting material Section 3 | 2026-06-08 → 2026-05-31 A (-8d) | 2026-06-30 → 2026-06-14 A (-16d) | 0% → 100% | 25d → none |  |
| SDR-2-CON-ST-ZA-6130 | Excavation for cutting material Section 4 | 2026-07-01 → 2026-06-09 A (-22d) | 2026-07-23 → 2026-06-22 A (-31d) | 0% → 100% | 25d → none |  |
| 3 | **Sand lining for pond bed** | 2026-07-25 → 2026-08-31 (+37d) | 2026-09-14 → 2026-10-28 (+44d) |  |  |  |
| SDR-2-CON-ST-ZA-6690 | Sand lining for pond bed Section 1 & Section 2 | 2026-07-25 → 2026-08-31 A (+37d) | 2026-08-17 → 2026-09-30 (+44d) | 0% → 30% | 25d → 60d |  |
| SDR-2-CON-ST-ZA-6150 | Sand lining for pond bed Section 3 & Section 4 | 2026-08-22 → 2026-10-05 (+44d) | 2026-09-14 → 2026-10-28 (+44d) |  | 25d → 60d |  |
| 6 | **Pipe Encasements,** | 2026-09-15 → 2026-10-29 (+44d) | 2026-10-10 → 2026-11-22 (+43d) |  |  |  |

| ID | Task | Start | Finish | Complete | Total float | Predecessors |
| --- | --- | --- | --- | --- | --- | --- |
| SDR-2-CON-ST-ZA-6180 | Pipe encasement | 2026-09-15 → 2026-10-29 (+44d) | 2026-10-10 → 2026-11-22 (+43d) |  | 25d → 60d |  |
| 5 | **Concrete Outfalls** | 2026-10-11 → 2026-11-23 (+43d) | 2026-11-03 → 2026-12-16 (+43d) |  |  |  |
| SDR-2-CON-ST-ZA-6170 | Concrete Outfall structure. | 2026-10-11 → 2026-11-23 (+43d) | 2026-11-03 → 2026-12-16 (+43d) |  | 25d → 60d |  |
| 4 | **Loose Riprap** | 2026-11-04 → 2026-07-20 (-107d) | 2026-11-28 → 2026-07-30 (-121d) |  |  |  |
| SDR-2-CON-ST-ZA-6160 | Loose Riprap work | 2026-11-04 → 2026-07-20 A (-107d) | 2026-11-28 → 2026-07-30 A (-121d) | 0% → 100% | 25d → none |  |
| 8 | **Pond B** | 2026-05-02 → 2026-03-25 (-38d) | 2027-03-03 → 2027-03-23 (+20d) |  |  |  |
| 2 | **Access road for Storm water Ponds** | 2026-05-02 → 2026-03-25 (-38d) | 2026-05-18 → 2026-03-30 (-49d) |  |  |  |
| SDR-2-CON-ST-ZA-6200 | Embankments with common / suitable excavated material | 2026-05-02 → 2026-03-25 A (-38d) | 2026-05-18 → 2026-03-30 A (-49d) | 0% → 100% | 17d → none |  |
| 1 | **Excavation** | 2026-05-19 → 2026-03-29 (-51d) | 2026-08-12 → 2026-06-23 (-50d) |  |  |  |
| SDR-2-CON-ST-ZA-6700 | Excavation for cutting material. Section 1 | 2026-05-19 → 2026-03-29 A (-51d) | 2026-06-16 → 2026-05-02 A (-45d) | 0% → 100% | 17d → none |  |
| SDR-2-CON-ST-ZA-6710 | Excavation for cutting material. Section 2 | 2026-06-17 → 2026-05-04 A (-44d) | 2026-07-11 → 2026-05-31 A (-41d) | 0% → 100% | 17d → none |  |
| SDR-2-CON-ST-ZA-6190 | Excavation for cutting material. Section 3 | 2026-07-20 → 2026-06-02 A (-48d) | 2026-08-12 → 2026-06-23 A (-50d) | 0% → 100% | 17d → none |  |
| 3 | **Sand lining for pond bed** | 2026-11-03 → 2026-08-31 (-64d) | 2026-12-19 → 2026-12-16 (-3d) |  |  |  |
| SDR-2-CON-ST-ZA-6720 | Sand lining for pond bed Section 1 | 2026-11-03 → 2026-08-31 A (-64d) | 2026-11-26 → 2026-11-24 (-2d) | 0% → 30% | 22d → 24d | SDR-2-CON-ST-ZA-6190, SDR-2-CON-ST-ZA-6340 SS+4d → SDR-2-CON-ST-ZA-6190, SDR-2-CON-ST-ZA-6340 FF |
| SDR-2-CON-ST-ZA-6210 | Sand lining for pond bed Section 2 | 2026-11-28 → 2026-11-25 (-3d) | 2026-12-19 → 2026-12-16 (-3d) |  | 22d → 24d |  |
| 6 | **Pipe Encasements,** | 2026-12-20 → 2026-12-17 (-3d) | 2027-01-12 → 2027-01-10 (-2d) |  |  |  |
| SDR-2-CON-ST-ZA-6240 | Pipe encasement | 2026-12-20 → 2026-12-17 (-3d) | 2027-01-12 → 2027-01-10 (-2d) |  | 22d → 24d |  |
| 5 | **Concrete Outfalls** | 2027-01-13 → 2027-01-11 (-2d) | 2027-02-06 → 2027-02-03 (-3d) |  |  |  |
| SDR-2-CON-ST-ZA-6230 | Concrete Outfall structure. | 2027-01-13 → 2027-01-11 (-2d) | 2027-02-06 → 2027-02-03 (-3d) |  | 22d → 24d |  |
| 4 | **Loose Riprap** | 2027-02-07 → 2027-02-23 (+16d) | 2027-03-03 → 2027-03-23 (+20d) |  |  |  |
| SDR-2-CON-ST-ZA-6220 | Loose Riprap work | 2027-02-07 → 2027-02-23 (+16d) | 2027-03-03 → 2027-03-23 (+20d) |  | 22d → 9d | SDR-2-CON-ST-ZA-6230, SDR-2-CON-ST-ZA-5930 FS+14d, SDR-2-CON-ST-ZA-5180 FS+11d, SDR-2-CON-ST-ZA-5030 FS+9d, SDR-2-CON-ST-ZA-4880 FS+14d, SDR-2-CON-ST-ZA-4730 FS+7d, SDR-2-CON-ST-ZA-4580 FS+5d, SDR-2-CON-ST-ZA-4430, SDR-2-CON-ST-ZA-4280 FS+14d, SDR-2-CON-ST-ZA-4130, SDR-2-CON-ST-ZA-3760 FF → SDR-2-CON-ST-ZA-6230, SDR-2-CON-ST-ZA-5180, SDR-2-CON-ST-ZA-5030 FS+9d, SDR-2-CON-ST-ZA-4880 FS+14d, SDR-2-CON-ST-ZA-4730 FS+7d, SDR-2-CON-ST-ZA-4580 FS+5d, SDR-2-CON-ST-ZA-4280 FS+14d, SDR-2-CON-ST-ZA-4130, SDR-2-CON-ST-ZA-3760 FF |
| 9 | **Pond C** | 2026-05-19 → 2026-04-09 (-40d) | 2026-12-29 → 2027-02-23 (+56d) |  |  |  |
| 2 | **Access road for Storm water Ponds** | 2026-05-19 → 2026-04-27 (-22d) | 2026-06-09 → 2026-07-20 (+41d) |  |  |  |
| SDR-2-CON-ST-ZA-3330 | Embankments with common / suitable excavated material | 2026-05-19 → 2026-04-27 A (-22d) | 2026-06-09 → 2026-07-20 A (+41d) | 0% → 100% | 23d → none |  |
| 1 | **Excavation** | 2026-06-10 → 2026-04-09 (-62d) | 2026-08-30 → 2026-10-25 (+56d) |  |  |  |
| SDR-2-CON-ST-ZA-6730 | Excavation for cutting material. Section 1 | 2026-06-10 → 2026-04-09 A (-62d) | 2026-07-04 → 2026-04-22 A (-73d) | 0% → 100% | 23d → none |  |
| SDR-2-CON-ST-ZA-6740 | Excavation for cutting material. Section 2 | 2026-07-08 → 2026-08-31 A (+54d) | 2026-08-01 → 2026-09-30 (+60d) | 0% → 25% | 23d → 2d | SDR-2-CON-ST-ZA-6730 FS+3d → SDR-2-CON-ST-ZA-6730 |
| SDR-2-CON-ST-ZA-3320 | Excavation for cutting material. Section 3 | 2026-08-06 → 2026-10-01 (+56d) | 2026-08-30 → 2026-10-25 (+56d) |  | 23d → 2d | SDR-2-CON-ST-ZA-6740 FS+4d → SDR-2-CON-ST-ZA-6740 |
| 3 | **Sand lining for pond bed** | 2026-08-31 → 2026-10-26 (+56d) | 2026-10-17 → 2026-12-10 (+54d) |  |  |  |
| SDR-2-CON-ST-ZA-6750 | Sand lining for pond bed Section 1 | 2026-08-31 → 2026-10-26 (+56d) | 2026-09-22 → 2026-11-17 (+56d) |  | 29d → 2d |  |
| SDR-2-CON-ST-ZA-3340 | Sand lining for pond bed Section 2 &Section 3 | 2026-09-24 → 2026-11-18 (+55d) | 2026-10-17 → 2026-12-10 (+54d) |  | 29d → 2d |  |
| 6 | **Pipe Encasements,** | 2026-10-18 → 2026-12-12 (+55d) | 2026-11-10 → 2027-01-04 (+55d) |  |  |  |
| SDR-2-CON-ST-ZA-3370 | Pipe encasement | 2026-10-18 → 2026-12-12 (+55d) | 2026-11-10 → 2027-01-04 (+55d) |  | 29d → 2d |  |
| 5 | **Concrete Outfalls** | 2026-11-11 → 2027-01-05 (+55d) | 2026-12-05 → 2027-01-28 (+54d) |  |  |  |
| SDR-2-CON-ST-ZA-3360 | Concrete Outfall structure. | 2026-11-11 → 2027-01-05 (+55d) | 2026-12-05 → 2027-01-28 (+54d) |  | 29d → 2d |  |
| 4 | **Loose Riprap** | 2026-12-06 → 2027-01-30 (+55d) | 2026-12-29 → 2027-02-23 (+56d) |  |  |  |
| SDR-2-CON-ST-ZA-3350 | Loose Riprap work | 2026-12-06 → 2027-01-30 (+55d) | 2026-12-29 → 2027-02-23 (+56d) |  | 29d → 2d |  |
| ZG | **ZONE G** | 2026-08-01 → 2026-04-30 (-93d) | 2027-05-04 → 2026-10-07 (-209d) |  |  |  |
| 11 | **STORM WATER LINE IN ( PH2-G-MCE0 )** | 2026-08-01 → 2026-04-30 (-93d) | 2027-05-01 → 2026-09-30 (-213d) |  |  |  |
| 8 | **Pipes Works** | 2026-08-01 → 2026-04-30 (-93d) | 2027-01-19 → 2026-08-31 (-141d) |  |  |  |
| 1 | **Excavation** | 2026-08-01 → 2026-04-30 (-93d) | 2026-10-13 → 2026-06-08 (-127d) |  |  |  |
| SDR-2-CON-ST-ZA-6880 | Excavation for GRP Pipes Section 1 | 2026-08-01 → 2026-04-30 A (-93d) | 2026-08-24 → 2026-06-01 A (-84d) | 0% → 100% | 0d → none |  |
| SDR-2-CON-ST-ZA-6760 | Excavation for GRP Pipes Section 2 | 2026-08-25 → 2026-05-06 A (-111d) | 2026-09-17 → 2026-06-04 A (-105d) | 0% → 100% | 3d → none |  |
| SDR-2-CON-ST-ZA-5380 | Excavation for GRP Pipes Section 3 | 2026-09-19 → 2026-06-04 A (-107d) | 2026-10-13 → 2026-06-08 A (-127d) | 0% → 100% | 3d → none |  |
| 7 | **bedding Works** | 2026-10-14 → 2026-05-16 (-151d) | 2026-11-07 → 2026-06-01 (-159d) |  |  |  |
| SDR-2-CON-ST-ZA-5440 | Sand bedding for GRP Pipes | 2026-10-14 → 2026-05-16 A (-151d) | 2026-11-07 → 2026-06-01 A (-159d) | 0% → 100% | 21d → none |  |
| 2 | **Pipes Laying** | 2026-11-08 → 2026-05-17 (-175d) | 2026-12-01 → 2026-06-18 (-166d) |  |  |  |
| SDR-2-CON-ST-ZA-5390 | Install ST GRP Pipes | 2026-11-08 → 2026-05-17 A (-175d) | 2026-12-01 → 2026-06-18 A (-166d) | 0% → 100% | 21d → none |  |
| 6 | **Testing** | 2026-12-02 → 2026-08-01 (-123d) | 2026-12-26 → 2026-08-08 (-140d) |  |  |  |
| SDR-2-CON-ST-ZA-5430 | Testing ST GRP Pipes | 2026-12-02 → 2026-08-01 A (-123d) | 2026-12-26 → 2026-08-08 A (-140d) | 0% → 100% | 21d → none |  |
| 3 | **Backfilling** | 2026-12-27 → 2026-08-09 (-140d) | 2027-01-19 → 2026-08-31 (-141d) |  |  |  |
| SDR-2-CON-ST-ZA-5400 | Backfilling ST GRP Pipes | 2026-12-27 → 2026-08-09 A (-140d) | 2027-01-19 → 2026-08-31 A (-141d) | 0% → 100% | 21d → none |  |
| 4 | **Manholes** | 2026-08-01 → 2026-05-13 (-80d) | 2027-02-23 → 2026-09-30 (-146d) |  |  |  |
| 1 | **Excavation** | 2026-08-01 → 2026-05-13 (-80d) | 2026-10-17 → 2026-06-09 (-130d) |  |  |  |
| SDR-2-CON-ST-ZA-6890 | Excavation Manholes Section 1 | 2026-08-01 → 2026-05-13 A (-80d) | 2026-08-24 → 2026-06-01 A (-84d) | 0% → 100% | 17d → none |  |
| SDR-2-CON-ST-ZA-6770 | Excavation Manholes Section 2 | 2026-08-25 → 2026-05-14 A (-103d) | 2026-09-17 → 2026-06-02 A (-107d) | 0% → 100% | 17d → none |  |
| SDR-2-CON-ST-ZA-5410 | Excavation Manholes Section 3 | 2026-09-22 → 2026-06-04 A (-110d) | 2026-10-17 → 2026-06-09 A (-130d) | 0% → 100% | 17d → none |  |
| 2 | **bedding Works** | 2026-10-18 → 2026-05-18 (-153d) | 2026-11-10 → 2026-06-11 (-152d) |  |  |  |
| SDR-2-CON-ST-ZA-5450 | Sand bedding for Manholes | 2026-10-18 → 2026-05-18 A (-153d) | 2026-11-10 → 2026-06-11 A (-152d) | 0% → 100% | 17d → none |  |
| 3 | **Install Manholes** | 2026-11-11 → 2026-06-01 (-163d) | 2027-01-04 → 2026-07-21 (-167d) |  |  |  |
| SDR-2-CON-ST-ZA-5460 | Manholes Installation Section 2 | 2026-12-12 → 2026-06-01 A (-194d) | 2027-01-04 → 2026-07-21 A (-167d) | 0% → 100% | 17d → none |  |
| SDR-2-CON-ST-ZA-6780 | Manholes Installation Section 1 | 2026-11-11 → 2026-06-01 A (-163d) | 2026-12-05 → 2026-06-01 A (-187d) | 0% → 100% | 17d → none |  |
| 4 | **Testing** | 2027-01-05 → 2026-08-31 (-127d) | 2027-01-28 → 2026-09-30 (-120d) |  |  |  |
| SDR-2-CON-ST-ZA-5470 | Testing for Manholes | 2027-01-05 → 2026-08-31 A (-127d) | 2027-01-28 → 2026-09-30 (-120d) | 0% → 25% | 17d → 144d |  |
| 5 | **Backfilling** | 2027-01-30 → 2026-08-16 (-167d) | 2027-02-23 → 2026-08-20 (-187d) |  |  |  |
| SDR-2-CON-ST-ZA-5480 | Backfilling for Manholes | 2027-01-30 → 2026-08-16 A (-167d) | 2027-02-23 → 2026-08-20 A (-187d) | 0% → 100% | 17d → none | SDR-2-CON-ST-ZA-5470 → SDR-2-CON-ST-ZA-5470 SS |
| 5 | **Catch basin** | 2026-12-06 → 2026-08-10 (-118d) | 2027-05-01 → 2026-08-27 (-247d) |  |  |  |
| 1 | **Excavation** | 2026-12-06 → 2026-08-10 (-118d) | 2027-01-26 → 2026-08-15 (-164d) |  |  |  |
| SDR-2-CON-ST-ZA-5420 | Excavation for Catch basin Section 2 | 2027-01-03 → 2026-08-10 A (-146d) | 2027-01-26 → 2026-08-15 A (-164d) | 0% → 100% | 18d → none |  |
| SDR-2-CON-ST-ZA-6790 | Excavation for Catch basin Section 1 | 2026-12-06 → 2026-08-10 A (-118d) | 2026-12-29 → 2026-08-15 A (-136d) | 0% → 100% | 18d → none |  |

| ID | Task | Start | Finish | Complete | Total float | Predecessors |
| --- | --- | --- | --- | --- | --- | --- |
| 2 | **bedding Works** | 2027-01-27 → 2026-08-15 (-165d) | 2027-02-20 → 2026-08-18 (-186d) |  |  |  |
| SDR-2-CON-ST-ZA-5490 | Sand Dedding for Catch basin | 2027-01-27 → 2026-08-15 A (-165d) | 2027-02-20 → 2026-08-18 A (-186d) | 0% → 100% | 18d → none |  |
| 3 | **Install Catch basin** | 2027-02-21 → 2026-08-18 (-187d) | 2027-03-22 → 2026-08-20 (-214d) |  |  |  |
| SDR-2-CON-ST-ZA-5500 | Install Catch basin | 2027-02-21 → 2026-08-18 A (-187d) | 2027-03-22 → 2026-08-20 A (-214d) | 0% → 100% | 18d → none |  |
| 4 | **Testing** | 2027-03-23 → 2026-08-18 (-217d) | 2027-03-31 → 2026-08-20 (-223d) |  |  |  |
| SDR-2-CON-ST-ZA-5510 | Testing for Catch basin pipe | 2027-03-23 → 2026-08-18 A (-217d) | 2027-03-31 → 2026-08-20 A (-223d) | 0% → 100% | 18d → none | SDR-2-CON-ST-ZA-6220, SDR-2-CON-ST-ZA-5500 → SDR-2-CON-ST-ZA-5500 |
| 5 | **Backfilling** | 2027-04-01 → 2026-08-20 (-224d) | 2027-05-01 → 2026-08-27 (-247d) |  |  |  |
| SDR-2-CON-ST-ZA-5520 | Backfilling for Catch basin Part 2 | 2027-04-17 → 2026-08-20 A (-240d) | 2027-05-01 → 2026-08-27 A (-247d) | 0% → 100% | 18d → none |  |
| SDR-2-CON-ST-ZA-6870 | Backfilling for Catch basin Part 1 | 2027-04-01 → 2026-08-20 A (-224d) | 2027-04-15 → 2026-08-27 A (-231d) | 0% → 100% | 18d → none |  |
| 12 | **STORM WATER LINE IN ( PH2-G-MCF0 )** | 2026-08-05 → 2026-05-09 (-88d) | 2027-05-04 → 2026-09-30 (-216d) |  |  |  |
| 8 | **Pipes Works** | 2026-08-05 → 2026-05-09 (-88d) | 2026-12-30 → 2026-08-16 (-136d) |  |  |  |
| 1 | **Excavation** | 2026-08-05 → 2026-05-09 (-88d) | 2026-09-22 → 2026-05-24 (-121d) |  |  |  |
| SDR-2-CON-ST-ZA-6800 | Excavation for GRP Pipes Section 1 | 2026-08-05 → 2026-05-09 A (-88d) | 2026-08-29 → 2026-05-18 A (-103d) | 0% → 100% | 0d → none |  |
| SDR-2-CON-ST-ZA-5530 | Excavation for GRP Pipes Section 2 | 2026-08-30 → 2026-05-18 A (-104d) | 2026-09-22 → 2026-05-24 A (-121d) | 0% → 100% | 13d → none |  |
| 7 | **bedding Works** | 2026-09-24 → 2026-05-18 (-129d) | 2026-10-18 → 2026-06-04 (-136d) |  |  |  |
| SDR-2-CON-ST-ZA-5590 | Sand bedding for GRP Pipes | 2026-09-24 → 2026-05-18 A (-129d) | 2026-10-18 → 2026-06-04 A (-136d) | 0% → 100% | 16d → none |  |
| 2 | **Pipes Laying** | 2026-10-19 → 2026-06-04 (-137d) | 2026-11-11 → 2026-07-12 (-122d) |  |  |  |
| SDR-2-CON-ST-ZA-5540 | Install ST GRP Pipes | 2026-10-19 → 2026-06-04 A (-137d) | 2026-11-11 → 2026-07-12 A (-122d) | 0% → 100% | 16d → none |  |
| 6 | **Testing** | 2026-11-12 → 2026-07-14 (-121d) | 2026-12-06 → 2026-07-20 (-139d) |  |  |  |
| SDR-2-CON-ST-ZA-5580 | Testing ST GRP Pipes | 2026-11-12 → 2026-07-14 A (-121d) | 2026-12-06 → 2026-07-20 A (-139d) | 0% → 100% | 16d → none |  |
| 3 | **Backfilling** | 2026-12-07 → 2026-08-09 (-120d) | 2026-12-30 → 2026-08-16 (-136d) |  |  |  |
| SDR-2-CON-ST-ZA-5550 | Backfilling ST GRP Pipes | 2026-12-07 → 2026-08-09 A (-120d) | 2026-12-30 → 2026-08-16 A (-136d) | 0% → 100% | 16d → none |  |
| 4 | **Manholes** | 2026-08-05 → 2026-05-18 (-79d) | 2027-01-09 → 2026-09-30 (-101d) |  |  |  |
| 1 | **Excavation** | 2026-08-05 → 2026-05-18 (-79d) | 2026-09-27 → 2026-06-06 (-113d) |  |  |  |
| SDR-2-CON-ST-ZA-6810 | Excavation Manholes Section 1 | 2026-08-05 → 2026-05-18 A (-79d) | 2026-08-29 → 2026-05-31 A (-90d) | 0% → 100% | 18d → none |  |
| SDR-2-CON-ST-ZA-5560 | Excavation Manholes Section 2 | 2026-09-02 → 2026-06-02 A (-92d) | 2026-09-27 → 2026-06-06 A (-113d) | 0% → 100% | 18d → none |  |
| 2 | **bedding Works** | 2026-09-28 → 2026-05-23 (-128d) | 2026-10-21 → 2026-06-06 (-137d) |  |  |  |
| SDR-2-CON-ST-ZA-5600 | Sand bedding for Manholes | 2026-09-28 → 2026-05-23 A (-128d) | 2026-10-21 → 2026-06-06 A (-137d) | 0% → 100% | 18d → none | SDR-2-PRO-ST-E-1110, SDR-2-CON-ST-ZA-5560 → SDR-2-CON-ST-ZA-5560 |
| 3 | **Install Manholes** | 2026-10-22 → 2026-06-01 (-143d) | 2026-11-15 → 2026-07-20 (-118d) |  |  |  |
| SDR-2-CON-ST-ZA-5610 | Manholes Installation | 2026-10-22 → 2026-06-01 A (-143d) | 2026-11-15 → 2026-07-20 A (-118d) | 0% → 100% | 18d → none |  |
| 4 | **Testing** | 2026-11-22 → 2026-08-31 (-83d) | 2026-12-15 → 2026-09-30 (-76d) |  |  |  |
| SDR-2-CON-ST-ZA-5620 | Testing for Manholes | 2026-11-22 → 2026-08-31 A (-83d) | 2026-12-15 → 2026-09-30 (-76d) | 0% → 25% | 20d → 109d |  |
| 5 | **Backfilling** | 2026-12-16 → 2026-08-16 (-122d) | 2027-01-09 → 2026-08-20 (-142d) |  |  |  |
| SDR-2-CON-ST-ZA-5630 | Backfilling for Manholes | 2026-12-16 → 2026-08-16 A (-122d) | 2027-01-09 → 2026-08-20 A (-142d) | 0% → 100% | 20d → none | SDR-2-CON-ST-ZA-5620 → SDR-2-CON-ST-ZA-5620 SS |
| 5 | **Catch basin** | 2026-11-16 → 2026-06-12 (-157d) | 2027-05-04 → 2026-08-30 (-247d) |  |  |  |
| 1 | **Excavation** | 2026-11-16 → 2026-06-12 (-157d) | 2027-01-03 → 2026-07-01 (-186d) |  |  |  |
| SDR-2-CON-ST-ZA-6820 | Excavation for Catch basin Section 1 | 2026-11-16 → 2026-06-12 A (-157d) | 2026-12-09 → 2026-07-01 A (-161d) | 0% → 100% | 18d → none |  |
| SDR-2-CON-ST-ZA-5570 | Excavation for Catch basin Section 2 | 2026-12-10 → 2026-06-22 A (-171d) | 2027-01-03 → 2026-07-01 A (-186d) | 0% → 100% | 18d → none |  |
| 2 | **bedding Works** | 2027-01-04 → 2026-08-09 (-148d) | 2027-01-27 → 2026-08-12 (-168d) |  |  |  |
| SDR-2-CON-ST-ZA-5640 | Sand Dedding for Catch basin | 2027-01-04 → 2026-08-09 A (-148d) | 2027-01-27 → 2026-08-12 A (-168d) | 0% → 100% | 18d → none |  |
| 3 | **Install Catch basin** | 2027-01-28 → 2026-08-13 (-168d) | 2027-03-23 → 2026-08-18 (-217d) |  |  |  |
| SDR-2-CON-ST-ZA-6830 | Install Catch basin Section 1 | 2027-01-28 → 2026-08-13 A (-168d) | 2027-02-21 → 2026-08-16 A (-189d) | 0% → 100% | 18d → none |  |
| SDR-2-CON-ST-ZA-5650 | Install Catch basin Section 2 | 2027-02-23 → 2026-08-16 A (-191d) | 2027-03-23 → 2026-08-18 A (-217d) | 0% → 100% | 18d → none | SDR-2-CON-ST-ZA-5640, SDR-2-CON-ST-ZA-4200, SDR-2-CON-ST-ZA-4350, SDR-2-CON-ST-ZA-4500, SDR-2-CON-ST-ZA-4650, SDR-2-CON-ST-ZA-4800, SDR-2-CON-ST-ZA-4950, SDR-2-CON-ST-ZA-5100, SDR-2-CON-ST-ZA-5850, SDR-2-CON-ST-ZA-5400 FS+4d, SDR-2-CON-ST-ZA-5550, SDR-2-CON-ST-ZA-6830 → SDR-2-CON-ST-ZA-6830, SDR-2-CON-ST-ZA-5640, SDR-2-CON-ST-ZA-5400 FS+4d, SDR-2-CON-ST-ZA-5550 |
| 4 | **Testing** | 2027-03-24 → 2026-08-18 (-218d) | 2027-04-17 → 2026-08-19 (-241d) |  |  |  |
| SDR-2-CON-ST-ZA-5660 | Testing for Catch basin pipe | 2027-03-24 → 2026-08-18 A (-218d) | 2027-04-17 → 2026-08-19 A (-241d) | 0% → 100% | 18d → none |  |
| 5 | **Backfilling** | 2027-04-18 → 2026-08-20 (-241d) | 2027-05-04 → 2026-08-30 (-247d) |  |  |  |
| SDR-2-CON-ST-ZA-5670 | Backfilling for Catch basin | 2027-04-18 → 2026-08-20 A (-241d) | 2027-05-04 → 2026-08-30 A (-247d) | 0% → 100% | 18d → none |  |
| 13 | **STORM WATER LINE IN ( PH2-G-MCG0 )** | 2026-08-10 → 2026-05-08 (-94d) | 2027-04-25 → 2026-10-07 (-200d) |  |  |  |
| 8 | **Pipes Works** | 2026-08-10 → 2026-05-08 (-94d) | 2027-01-13 → 2026-08-17 (-149d) |  |  |  |
| 1 | **Excavation** | 2026-08-10 → 2026-05-08 (-94d) | 2026-10-07 → 2026-05-31 (-129d) |  |  |  |
| SDR-2-CON-ST-ZA-6840 | Excavation for GRP Pipes Section 1 | 2026-08-10 → 2026-05-08 A (-94d) | 2026-09-02 → 2026-05-18 A (-107d) | 0% → 100% | 0d → none |  |
| SDR-2-CON-ST-ZA-5980 | Excavation for GRP Pipes Section 2 | 2026-09-13 → 2026-05-18 A (-118d) | 2026-10-07 → 2026-05-31 A (-129d) | 0% → 100% | 0d → none |  |
| 7 | **bedding Works** | 2026-10-08 → 2026-06-01 (-129d) | 2026-11-01 → 2026-06-08 (-146d) |  |  |  |
| SDR-2-CON-ST-ZA-6040 | Sand bedding for GRP Pipes | 2026-10-08 → 2026-06-01 A (-129d) | 2026-11-01 → 2026-06-08 A (-146d) | 0% → 100% | 20d → none |  |
| 2 | **Pipes Laying** | 2026-11-02 → 2026-06-06 (-149d) | 2026-11-25 → 2026-07-06 (-142d) |  |  |  |
| SDR-2-CON-ST-ZA-5990 | Install ST GRP Pipes | 2026-11-02 → 2026-06-06 A (-149d) | 2026-11-25 → 2026-07-06 A (-142d) | 0% → 100% | 20d → none |  |
| 6 | **Testing** | 2026-11-26 → 2026-07-07 (-142d) | 2026-12-20 → 2026-07-20 (-153d) |  |  |  |
| SDR-2-CON-ST-ZA-6030 | Testing ST GRP Pipes | 2026-11-26 → 2026-07-07 A (-142d) | 2026-12-20 → 2026-07-20 A (-153d) | 0% → 100% | 20d → none |  |
| 3 | **Backfilling** | 2026-12-21 → 2026-08-16 (-127d) | 2027-01-13 → 2026-08-17 (-149d) |  |  |  |
| SDR-2-CON-ST-ZA-6000 | Backfilling ST GRP Pipes | 2026-12-21 → 2026-08-16 A (-127d) | 2027-01-13 → 2026-08-17 A (-149d) | 0% → 100% | 20d → none |  |
| 4 | **Manholes** | 2026-08-10 → 2026-05-16 (-86d) | 2027-01-07 → 2026-10-07 (-92d) |  |  |  |
| 1 | **Excavation** | 2026-08-10 → 2026-05-16 (-86d) | 2026-10-01 → 2026-06-01 (-122d) |  |  |  |
| SDR-2-CON-ST-ZA-6850 | Excavation Manholes Section 1 | 2026-08-10 → 2026-05-16 A (-86d) | 2026-09-02 → 2026-05-23 A (-102d) | 0% → 100% | 9.2d → none |  |
| SDR-2-CON-ST-ZA-6010 | Excavation Manholes Section 2 | 2026-09-07 → 2026-05-23 A (-107d) | 2026-10-01 → 2026-06-01 A (-122d) | 0% → 100% | 9.2d → none |  |
| 2 | **bedding Works** | 2026-10-03 → 2026-06-02 (-123d) | 2026-10-26 → 2026-06-06 (-142d) |  |  |  |
| SDR-2-CON-ST-ZA-6050 | Sand bedding for Manholes | 2026-10-03 → 2026-06-02 A (-123d) | 2026-10-26 → 2026-06-06 A (-142d) | 0% → 100% | 9.2d → none | SDR-2-PRO-ST-E-1110, SDR-2-PRO-DEL-E-1160, SDR-2-CON-ST-ZA-6010 → SDR-2-CON-ST-ZA-6010, SDR-2-PRO-DEL-E-1160 SS |
| 3 | **Install Manholes** | 2026-10-27 → 2026-06-07 (-142d) | 2026-11-19 → 2026-07-01 (-141d) |  |  |  |
| SDR-2-CON-ST-ZA-6060 | Manholes Installation | 2026-10-27 → 2026-06-07 A (-142d) | 2026-11-19 → 2026-07-01 A (-141d) | 0% → 100% | 9.2d → none |  |
| 4 | **Testing** | 2026-11-21 → 2026-09-07 (-75d) | 2026-12-14 → 2026-10-07 (-68d) |  |  |  |
| SDR-2-CON-ST-ZA-6070 | Testing for Manholes | 2026-11-21 → 2026-09-07 A (-75d) | 2026-12-14 → 2026-10-07 (-68d) | 0% → 25% | 21d → 109d |  |

| ID | Task | Start | Finish | Complete | Total float | Predecessors |
| --- | --- | --- | --- | --- | --- | --- |
| 5 | **Backfilling** | 2026-12-15 → 2026-08-17 (-120d) | 2027-01-07 → 2026-08-20 (-140d) |  |  |  |
| SDR-2-CON-ST-ZA-6080 | Backfilling for Manholes | 2026-12-15 → 2026-08-17 A (-120d) | 2027-01-07 → 2026-08-20 A (-140d) | 0% → 100% | 21d → none | SDR-2-CON-ST-ZA-6070 → SDR-2-CON-ST-ZA-6070 SS |
| 5 | **Catch basin** | 2026-12-12 → 2026-06-08 (-187d) | 2027-04-25 → 2026-08-29 (-239d) |  |  |  |
| 1 | **Excavation** | 2026-12-12 → 2026-06-08 (-187d) | 2027-01-26 → 2026-07-16 (-194d) |  |  |  |
| SDR-2-CON-ST-ZA-6860 | Excavation for Catch basin Section 1 | 2026-12-12 → 2026-06-08 A (-187d) | 2027-01-03 → 2026-07-16 A (-171d) | 0% → 100% | 9.2d → none |  |
| SDR-2-CON-ST-ZA-6020 | Excavation for Catch basin Section 2 | 2027-01-04 → 2026-06-15 A (-203d) | 2027-01-26 → 2026-07-16 A (-194d) | 0% → 100% | 9.2d → none |  |
| 2 | **bedding Works** | 2027-01-27 → 2026-07-23 (-188d) | 2027-02-20 → 2026-07-28 (-207d) |  |  |  |
| SDR-2-CON-ST-ZA-6090 | Sand Dedding for Catch basin | 2027-01-27 → 2026-07-23 A (-188d) | 2027-02-20 → 2026-07-28 A (-207d) | 0% → 100% | 9.2d → none |  |
| 3 | **Install Catch basin** | 2027-02-21 → 2026-07-27 (-209d) | 2027-03-22 → 2026-08-01 (-233d) |  |  |  |
| SDR-2-CON-ST-ZA-6100 | Install Catch basin | 2027-02-21 → 2026-07-27 A (-209d) | 2027-03-22 → 2026-08-01 A (-233d) | 0% → 100% | 9.2d → none |  |
| 4 | **Testing** | 2027-03-23 → 2026-08-03 (-232d) | 2027-03-31 → 2026-08-10 (-233d) |  |  |  |
| SDR-2-CON-ST-ZA-6110 | Testing for Catch basin pipe | 2027-03-23 → 2026-08-03 A (-232d) | 2027-03-31 → 2026-08-10 A (-233d) | 0% → 100% | 9.2d → none |  |
| 5 | **Backfilling** | 2027-04-01 → 2026-08-09 (-235d) | 2027-04-25 → 2026-08-29 (-239d) |  |  |  |
| SDR-2-CON-ST-ZA-6120 | Backfilling for Catch basin | 2027-04-01 → 2026-08-09 A (-235d) | 2027-04-25 → 2026-08-29 A (-239d) | 0% → 100% | 9.2d → none |  |
| SN | **Sewerage Network** | 2026-09-24 → 2026-05-18 (-129d) | 2027-04-05 → 2027-03-24 (-12d) |  |  |  |
| ZA | **ZONE A** | 2026-09-24 → 2026-05-18 (-129d) | 2027-04-05 → 2027-03-24 (-12d) |  |  |  |
| 3 | **LINE 1 ( PH2-A-MCA0 )** | 2026-09-24 → 2026-06-01 (-115d) | 2027-02-25 → 2026-11-15 (-102d) |  |  |  |
| 7 | **Pipes Work** | 2026-09-24 → 2026-06-01 (-115d) | 2027-02-20 → 2026-11-15 (-97d) |  |  |  |
| 1 | **Excavation** | 2026-09-24 → 2026-06-01 (-115d) | 2026-11-14 → 2026-07-21 (-116d) |  |  |  |
| SDR-2-CON-SE-ZA-2460 | Excavation for GRP Pipe 200mm Diameter Section 1 | 2026-09-24 → 2026-06-01 A (-115d) | 2026-10-18 → 2026-06-08 A (-132d) | 0% → 100% | 5d → none |  |
| SDR-2-CON-SE-ZA-1000 | Excavation for GRP Pipe 200mm Diameter Section 2 | 2026-10-22 → 2026-06-08 A (-136d) | 2026-11-14 → 2026-07-21 A (-116d) | 0% → 100% | 5d → none | SDR-2-PRO-DEL-E-1190, SDR-2-PRO-DEL-E-1180, SDR-2-PRO-DEL-E-1170, SDR-2-PRO-DES-C-1020, SDR-2-CON-SE-ZA-2460 FS+3d → SDR-2-CON-SE-ZA-2460 FS+3d, SDR-2-PRO-DEL-E-1190 SS, SDR-2-PRO-DEL-E-1180 SS, SDR-2-PRO-DEL-E-1170 SS, SDR-2-PRO-DES-C-1020 SS |
| 5 | **bedding Works** | 2026-11-15 → 2026-06-15 (-153d) | 2026-12-08 → 2026-07-25 (-136d) |  |  |  |
| SDR-2-CON-SE-ZA-1420 | Sand bedding for GRP Pipe 200mm Diameter | 2026-11-15 → 2026-06-15 A (-153d) | 2026-12-08 → 2026-07-25 A (-136d) | 0% → 100% | 26d → none |  |
| 2 | **Pipes Laying** | 2026-12-09 → 2026-06-22 (-170d) | 2027-01-02 → 2026-09-28 (-96d) |  |  |  |
| SDR-2-CON-SE-ZA-1010 | 200 mm GRP Pipe Laying | 2026-12-09 → 2026-06-22 A (-170d) | 2027-01-02 → 2026-09-28 (-96d) | 0% → 90% | 26d → 129d |  |
| 3 | **Testing** | 2027-01-03 → 2026-08-16 (-140d) | 2027-01-26 → 2026-10-21 (-97d) |  |  |  |
| SDR-2-CON-SE-ZA-1020 | Testing of 200 mm GRP Pipe. | 2027-01-03 → 2026-08-16 A (-140d) | 2027-01-26 → 2026-10-21 (-97d) | 0% → 55% | 26d → 109.1d | SDR-2-CON-RW-ZA-1760 FS+3d, SDR-2-CON-SE-ZA-1010 → SDR-2-CON-SE-ZA-1010 FF, SDR-2-CON-RW-ZA-1760 FF |
| 6 | **Backfilling** | 2027-01-27 → 2026-10-21 (-98d) | 2027-02-20 → 2026-11-15 (-97d) |  |  |  |
| SDR-2-CON-SE-ZA-1430 | Backfilling of 200 mm GRP Pipe. | 2027-01-27 → 2026-10-21 (-98d) | 2027-02-20 → 2026-11-15 (-97d) |  | 26d → 109.1d |  |
| 4 | **Manholes** | 2026-09-24 → 2026-06-15 (-101d) | 2027-02-25 → 2026-10-22 (-126d) |  |  |  |
| 1 | **Excavation** | 2026-09-24 → 2026-06-15 (-101d) | 2026-11-11 → 2026-07-21 (-113d) |  |  |  |
| SDR-2-CON-SE-ZA-2470 | Excavation for manhole. Section 1 | 2026-09-24 → 2026-06-15 A (-101d) | 2026-10-18 → 2026-06-24 A (-116d) | 0% → 100% | 20d → none |  |
| SDR-2-CON-SE-ZA-1030 | Excavation for manhole. Section 2 | 2026-10-19 → 2026-07-01 A (-110d) | 2026-11-11 → 2026-07-21 A (-113d) | 0% → 100% | 20d → none | SDR-2-CON-RW-ZA-3400, SDR-2-CON-RW-ZA-1040, SDR-2-CON-SE-ZA-2470 → SDR-2-CON-SE-ZA-2470, SDR-2-CON-RW-ZA-1040 |
| 2 | **bedding Works** | 2026-11-19 → 2026-07-05 (-137d) | 2026-12-13 → 2026-07-23 (-143d) |  |  |  |
| SDR-2-CON-SE-ZA-1450 | Sand bedding for manhole. | 2026-11-19 → 2026-07-05 A (-137d) | 2026-12-13 → 2026-07-23 A (-143d) | 0% → 100% | 14d → none | SDR-2-CON-RW-ZA-2480, SDR-2-CON-SE-ZA-1030 → SDR-2-CON-SE-ZA-1030 |
| 3 | **Install Manholes** | 2026-12-14 → 2026-07-06 (-161d) | 2027-01-06 → 2026-10-21 (-77d) |  |  |  |
| SDR-2-CON-SE-ZA-1040 | Manhole Installation | 2026-12-14 → 2026-07-06 A (-161d) | 2027-01-06 → 2026-10-21 (-77d) | 0% → 90% | 14d → 164.1d | SDR-2-CON-RW-ZA-3110, SDR-2-CON-SE-ZA-1030, SDR-2-PRO-ST-M-1030, SDR-2-PRO-MAS-C-1070, SDR-2-CON-SE-ZA-1450 → SDR-2-CON-RW-ZA-3110, SDR-2-CON-SE-ZA-1030, SDR-2-PRO-MAS-C-1070, SDR-2-PRO-ST-M-1030 FF, SDR-2-CON-SE-ZA-1450 |
| 4 | **Testing** | 2027-01-07 → 2026-07-09 (-182d) | 2027-01-31 → 2026-09-28 (-125d) |  |  |  |
| SDR-2-CON-SE-ZA-1050 | Testing | 2027-01-07 → 2026-07-09 A (-182d) | 2027-01-31 → 2026-09-28 (-125d) | 0% → 60% | 14d → 139d | SDR-2-CON-RW-ZA-2900, SDR-2-CON-SE-ZA-1040, SDR-2-CON-SE-ZA-1040 FF → SDR-2-CON-RW-ZA-2900 |
| 5 | **Backfilling** | 2027-02-01 → 2026-09-29 (-125d) | 2027-02-25 → 2026-10-22 (-126d) |  |  |  |
| SDR-2-CON-SE-ZA-1440 | Backfilling | 2027-02-01 → 2026-09-29 (-125d) | 2027-02-25 → 2026-10-22 (-126d) |  | 14d → 139d |  |
| 4 | **LINE 2 AND LINE 3 ( PH2-A-MCC0 )** | 2026-10-06 → 2026-06-08 (-120d) | 2027-03-17 → 2027-01-27 (-49d) |  |  |  |
| 7 | **Pipes Work** | 2026-10-06 → 2026-06-08 (-120d) | 2027-03-17 → 2027-01-27 (-49d) |  |  |  |
| 1 | **Excavation** | 2026-10-06 → 2026-06-08 (-120d) | 2026-11-30 → 2026-06-22 (-161d) |  |  |  |
| SDR-2-CON-SE-ZA-2480 | Excavation for GRP Pipe 200mm Diameter Section 1 | 2026-10-06 → 2026-06-08 A (-120d) | 2026-10-29 → 2026-06-15 A (-136d) | 0% → 100% | 19d → none |  |
| SDR-2-CON-SE-ZA-1460 | Excavation for GRP Pipe 200mm Diameter Section 2 | 2026-11-08 → 2026-06-15 A (-146d) | 2026-11-30 → 2026-06-22 A (-161d) | 0% → 100% | 19d → none | SDR-2-CON-RW-ZA-3420, SDR-2-CON-SE-ZA-2480 FS+7d → SDR-2-CON-SE-ZA-2480 FS+7d |
| 5 | **bedding Works** | 2026-12-01 → 2026-07-12 (-142d) | 2026-12-24 → 2026-07-20 (-157d) |  |  |  |
| SDR-2-CON-SE-ZA-1520 | Sand bedding for GRP Pipe 200mm Diameter | 2026-12-01 → 2026-07-12 A (-142d) | 2026-12-24 → 2026-07-20 A (-157d) | 0% → 100% | 22d → none |  |
| 2 | **Pipes Laying** | 2026-12-29 → 2026-07-22 (-160d) | 2027-01-21 → 2026-11-01 (-81d) |  |  |  |
| SDR-2-CON-SE-ZA-1470 | 200 mm GRP Pipe Laying | 2026-12-29 → 2026-07-22 A (-160d) | 2027-01-21 → 2026-11-01 (-81d) | 0% → 90% | 19d → 110d | SDR-2-CON-RW-ZG-2260 FS+3d, SDR-2-CON-SE-ZA-1460, SDR-2-CON-SE-ZA-1520 → SDR-2-CON-SE-ZA-1460, SDR-2-CON-SE-ZA-1520, SDR-2-CON-RW-ZG-2260 FF |
| 3 | **Testing** | 2027-01-23 → 2026-08-17 (-159d) | 2027-02-15 → 2027-01-03 (-43d) |  |  |  |
| SDR-2-CON-SE-ZA-1480 | Testing of 200 mm GRP Pipe. | 2027-01-23 → 2026-08-17 A (-159d) | 2027-02-15 → 2027-01-03 (-43d) | 0% → 60% | 19d → 56d | SDR-2-CON-ST-ZA-5100, SDR-2-CON-ST-ZA-1300, SDR-2-CON-RW-ZA-1050 FS+2d, SDR-2-CON-SE-ZA-1470, SDR-2-CON-ST-ZA-5550 → SDR-2-CON-ST-ZA-5550, SDR-2-CON-RW-ZA-1050 FS+2d, SDR-2-CON-SE-ZA-1470 FF, SDR-2-CON-ST-ZA-5100 FF, SDR-2-CON-ST-ZA-1300 FF |
| 6 | **Backfilling** | 2027-02-16 → 2027-01-04 (-43d) | 2027-03-17 → 2027-01-27 (-49d) |  |  |  |
| SDR-2-CON-SE-ZA-1530 | Backfilling of 200 mm GRP Pipe. | 2027-02-16 → 2027-01-04 (-43d) | 2027-03-17 → 2027-01-27 (-49d) |  | 19d → 56d |  |
| 4 | **Manholes** | 2026-10-06 → 2026-06-11 (-117d) | 2027-03-17 → 2026-11-25 (-112d) |  |  |  |
| 1 | **Excavation** | 2026-10-06 → 2026-06-11 (-117d) | 2026-11-26 → 2026-06-30 (-149d) |  |  |  |
| SDR-2-CON-SE-ZA-2490 | Excavation for manhole. Section 1 | 2026-10-06 → 2026-06-11 A (-117d) | 2026-10-29 → 2026-06-20 A (-131d) | 0% → 100% | 25d → none |  |
| SDR-2-CON-SE-ZA-1490 | Excavation for manhole. Section 2 | 2026-11-03 → 2026-06-21 A (-135d) | 2026-11-26 → 2026-06-30 A (-149d) | 0% → 100% | 25d → none | SDR-2-CON-RW-ZA-3420, SDR-2-CON-SE-ZA-2490 FS+3d → SDR-2-CON-SE-ZA-2490 FS+3d |
| 2 | **bedding Works** | 2026-11-28 → 2026-07-01 (-150d) | 2026-12-21 → 2026-07-13 (-161d) |  |  |  |
| SDR-2-CON-SE-ZA-1550 | Sand bedding for manhole. | 2026-11-28 → 2026-07-01 A (-150d) | 2026-12-21 → 2026-07-13 A (-161d) | 0% → 100% | 25d → none |  |
| 3 | **Install Manholes** | 2026-12-22 → 2026-07-07 (-168d) | 2027-01-14 → 2026-09-28 (-108d) |  |  |  |
| SDR-2-CON-SE-ZA-1500 | Manhole Installation | 2026-12-22 → 2026-07-07 A (-168d) | 2027-01-14 → 2026-09-28 (-108d) | 0% → 90% | 25d → 184d | SDR-2-CON-RW-ZG-2500, SDR-2-CON-SE-ZA-1490, SDR-2-CON-SE-ZA-1550 → SDR-2-CON-SE-ZA-1490, SDR-2-CON-SE-ZA-1550, SDR-2-CON-RW-ZG-2500 FF |
| 4 | **Testing** | 2027-01-23 → 2026-08-26 (-150d) | 2027-02-15 → 2026-11-01 (-106d) |  |  |  |
| SDR-2-CON-SE-ZA-1510 | Testing | 2027-01-23 → 2026-08-26 A (-150d) | 2027-02-15 → 2026-11-01 (-106d) | 0% → 45% | 19d → 110d | SDR-2-CON-RW-ZG-1060 FS+3d, SDR-2-CON-SE-ZA-1500, SDR-2-CON-SE-ZA-1500 FF, SDR-2-CON-ST-ZA-5550, SDR-2-CON-ST-ZA-5400 → SDR-2-CON-ST-ZA-5550, SDR-2-CON-ST-ZA-5400, SDR-2-CON-RW-ZG-1060 FF |
| 5 | **Backfilling** | 2027-02-16 → 2026-11-02 (-106d) | 2027-03-17 → 2026-11-25 (-112d) |  |  |  |
| SDR-2-CON-SE-ZA-1540 | Backfilling | 2027-02-16 → 2026-11-02 (-106d) | 2027-03-17 → 2026-11-25 (-112d) |  | 19d → 110d |  |
| 5 | **LINE 4 AND LINE 5 ( PH2-A-MCD0 )** | 2026-10-10 → 2026-05-18 (-145d) | 2027-04-04 → 2027-03-24 (-11d) |  |  |  |
| 7 | **Pipes Work** | 2026-10-10 → 2026-05-18 (-145d) | 2027-03-15 → 2027-01-27 (-47d) |  |  |  |
| 1 | **Excavation** | 2026-10-10 → 2026-05-18 (-145d) | 2026-12-01 → 2026-06-15 (-169d) |  |  |  |
| SDR-2-CON-SE-ZA-2500 | Excavation for GRP Pipe 200mm Diameter Section 1 | 2026-10-10 → 2026-05-18 A (-145d) | 2026-11-02 → 2026-05-24 A (-162d) | 0% → 100% | 4d → none | SDR-2-CON-ST-ZA-4030 FS+10d, SDR-2-CON-ST-ZA-6190, SDR-2-CON-ST-ZA-6290 → SDR-2-CON-ST-ZA-4030 FS+10d, SDR-2-CON-ST-ZA-6190 |

| ID | Task | Start | Finish | Complete | Total float | Predecessors |
| --- | --- | --- | --- | --- | --- | --- |
| SDR-2-CON-SE-ZA-1560 | Excavation for GRP Pipe 200mm Diameter Section 2 | 2026-11-08 → 2026-05-24 A (-168d) | 2026-12-01 → 2026-06-15 A (-169d) | 0% → 100% | 8d → none |  |
| 5 | **bedding Works** | 2026-12-02 → 2026-06-22 (-163d) | 2026-12-26 → 2026-06-30 (-179d) |  |  |  |
| SDR-2-CON-SE-ZA-1620 | Sand bedding for GRP Pipe 200mm Diameter | 2026-12-02 → 2026-06-22 A (-163d) | 2026-12-26 → 2026-06-30 A (-179d) | 0% → 100% | 21d → none |  |
| 2 | **Pipes Laying** | 2026-12-27 → 2026-07-21 (-159d) | 2027-01-19 → 2026-09-28 (-113d) |  |  |  |
| SDR-2-CON-SE-ZA-1570 | 200 mm GRP Pipe Laying | 2026-12-27 → 2026-07-21 A (-159d) | 2027-01-19 → 2026-09-28 (-113d) | 0% → 80% | 21d → 139d |  |
| 3 | **Testing** | 2027-01-20 → 2026-08-16 (-157d) | 2027-02-13 → 2027-01-03 (-41d) |  |  |  |
| SDR-2-CON-SE-ZA-1580 | Testing of 200 mm GRP Pipe. | 2027-01-20 → 2026-08-16 A (-157d) | 2027-02-13 → 2027-01-03 (-41d) | 0% → 60% | 21d → 56d | SDR-2-CON-ST-ZA-4500, SDR-2-CON-SE-ZA-1570, SDR-2-CON-ST-ZA-6160 → SDR-2-CON-ST-ZA-6160, SDR-2-CON-SE-ZA-1570 FF, SDR-2-CON-ST-ZA-4500 FF |
| 6 | **Backfilling** | 2027-02-14 → 2027-01-04 (-41d) | 2027-03-15 → 2027-01-27 (-47d) |  |  |  |
| SDR-2-CON-SE-ZA-1630 | Backfilling of 200 mm GRP Pipe. | 2027-02-14 → 2027-01-04 (-41d) | 2027-03-15 → 2027-01-27 (-47d) |  | 21d → 56d |  |
| 4 | **Manholes** | 2026-11-03 → 2026-05-18 (-169d) | 2027-04-04 → 2027-03-24 (-11d) |  |  |  |
| 1 | **Excavation** | 2026-11-03 → 2026-05-18 (-169d) | 2026-12-21 → 2026-07-16 (-158d) |  |  |  |
| SDR-2-CON-SE-ZA-2510 | Excavation for manhole. Section 1 | 2026-11-03 → 2026-05-18 A (-169d) | 2026-11-26 → 2026-05-25 A (-185d) | 0% → 100% | 4d → none | SDR-2-CON-SE-ZA-2500, SDR-2-CON-ST-ZA-3310 → SDR-2-CON-SE-ZA-2500 |
| SDR-2-CON-SE-ZA-1590 | Excavation for manhole. Section 2 | 2026-11-28 → 2026-07-09 A (-142d) | 2026-12-21 → 2026-07-16 A (-158d) | 0% → 100% | 4d → none |  |
| 2 | **bedding Works** | 2026-12-22 → 2026-07-16 (-159d) | 2027-01-14 → 2026-07-27 (-171d) |  |  |  |
| SDR-2-CON-SE-ZA-1650 | Sand bedding for manhole. | 2026-12-22 → 2026-07-16 A (-159d) | 2027-01-14 → 2026-07-27 A (-171d) | 0% → 100% | 4d → none |  |
| 3 | **Install Manholes** | 2027-01-16 → 2026-07-27 (-173d) | 2027-02-08 → 2027-01-03 (-36d) |  |  |  |
| SDR-2-CON-SE-ZA-1600 | Manhole Installation | 2027-01-16 → 2026-07-27 A (-173d) | 2027-02-08 → 2027-01-03 (-36d) | 0% → 80% | 4d → 46d | SDR-2-CON-ST-ZA-4500, SDR-2-CON-SE-ZA-1590, SDR-2-CON-SE-ZA-1650, SDR-2-CON-ST-ZA-6160 → SDR-2-CON-ST-ZA-6160, SDR-2-CON-SE-ZA-1590, SDR-2-CON-SE-ZA-1650, SDR-2-CON-ST-ZA-4500 FF |
| 4 | **Testing** | 2027-02-09 → 2026-08-27 (-166d) | 2027-03-06 → 2027-01-04 (-61d) |  |  |  |
| SDR-2-CON-SE-ZA-1610 | Testing | 2027-02-09 → 2026-08-27 A (-166d) | 2027-03-06 → 2027-01-04 (-61d) | 0% → 25% | 4d → 46d | SDR-2-CON-SE-ZA-1600 → SDR-2-CON-SE-ZA-1600 FF |
| 5 | **Backfilling** | 2027-03-07 → 2027-02-24 (-11d) | 2027-04-04 → 2027-03-24 (-11d) |  |  |  |
| SDR-2-CON-SE-ZA-2690 | Backfilling | 2027-03-07 → 2027-02-24 (-11d) | 2027-04-04 → 2027-03-24 (-11d) |  | 4d → 3d |  |
| 6 | **LINE 6 AND LINE 7 ( PH2-A-MCE0 )** | 2026-10-21 → 2026-06-08 (-135d) | 2027-04-05 → 2027-01-28 (-67d) |  |  |  |
| 7 | **Pipes Work** | 2026-10-21 → 2026-06-08 (-135d) | 2027-04-05 → 2027-01-28 (-67d) |  |  |  |
| 1 | **Excavation** | 2026-10-21 → 2026-06-08 (-135d) | 2026-12-12 → 2026-07-20 (-145d) |  |  |  |
| SDR-2-CON-SE-ZA-2520 | Excavation for GRP Pipe 200mm Diameter Section 1 | 2026-10-21 → 2026-06-08 A (-135d) | 2026-11-14 → 2026-06-15 A (-152d) | 0% → 100% | 12d → none |  |
| SDR-2-CON-SE-ZA-1660 | Excavation for GRP Pipe 200mm Diameter Section 2 | 2026-11-18 → 2026-06-15 A (-156d) | 2026-12-12 → 2026-07-20 A (-145d) | 0% → 100% | 12d → none | SDR-2-CON-ST-ZA-3310, SDR-2-CON-SE-ZA-2520 FS+3d → SDR-2-CON-SE-ZA-2520 FS+3d |
| 5 | **bedding Works** | 2026-12-13 → 2026-07-20 (-146d) | 2027-01-05 → 2026-08-05 (-153d) |  |  |  |
| SDR-2-CON-SE-ZA-1720 | Sand bedding for GRP Pipe 200mm Diameter | 2026-12-13 → 2026-07-20 A (-146d) | 2027-01-05 → 2026-08-05 A (-153d) | 0% → 100% | 19d → none |  |
| 2 | **Pipes Laying** | 2027-01-17 → 2026-07-28 (-173d) | 2027-02-09 → 2026-12-17 (-54d) |  |  |  |
| SDR-2-CON-SE-ZA-1670 | 200 mm GRP Pipe Laying | 2027-01-17 → 2026-07-28 A (-173d) | 2027-02-09 → 2026-12-17 (-54d) | 0% → 75% | 10d → 77d | SDR-2-CON-RW-ZA-2850, SDR-2-CON-SE-ZA-1660, SDR-2-CON-SE-ZA-1720 → SDR-2-CON-SE-ZA-1660, SDR-2-CON-SE-ZA-1720, SDR-2-CON-RW-ZA-2850 FF |
| 3 | **Testing** | 2027-02-10 → 2026-08-16 (-178d) | 2027-03-07 → 2027-01-04 (-62d) |  |  |  |
| SDR-2-CON-SE-ZA-1680 | Testing of 200 mm GRP Pipe. | 2027-02-10 → 2026-08-16 A (-178d) | 2027-03-07 → 2027-01-04 (-62d) | 0% → 60% | 10d → 62d | SDR-2-CON-ST-ZA-4580, SDR-2-CON-SE-ZA-1670 → SDR-2-CON-SE-ZA-1670 FF, SDR-2-CON-ST-ZA-4580 FF |
| 6 | **Backfilling** | 2027-03-08 → 2027-01-05 (-62d) | 2027-04-05 → 2027-01-28 (-67d) |  |  |  |
| SDR-2-CON-SE-ZA-1730 | Backfilling of 200 mm GRP Pipe. | 2027-03-08 → 2027-01-05 (-62d) | 2027-04-05 → 2027-01-28 (-67d) |  | 10d → 62d |  |
| 4 | **Manholes** | 2026-10-21 → 2026-06-14 (-129d) | 2027-03-28 → 2027-01-07 (-80d) |  |  |  |
| 1 | **Excavation** | 2026-10-21 → 2026-06-14 (-129d) | 2026-12-08 → 2026-07-01 (-160d) |  |  |  |
| SDR-2-CON-SE-ZA-2530 | Excavation for manhole. Section 1 | 2026-10-21 → 2026-06-14 A (-129d) | 2026-11-14 → 2026-06-22 A (-145d) | 0% → 100% | 17d → none |  |
| SDR-2-CON-SE-ZA-1690 | Excavation for manhole.Section 2 | 2026-11-15 → 2026-06-23 A (-145d) | 2026-12-08 → 2026-07-01 A (-160d) | 0% → 100% | 17d → none |  |
| 2 | **bedding Works** | 2026-12-09 → 2026-07-01 (-161d) | 2027-01-02 → 2026-07-13 (-173d) |  |  |  |
| SDR-2-CON-SE-ZA-1750 | Sand bedding for manhole. | 2026-12-09 → 2026-07-01 A (-161d) | 2027-01-02 → 2026-07-13 A (-173d) | 0% → 100% | 17d → none |  |
| 3 | **Install Manholes** | 2027-01-03 → 2026-07-15 (-172d) | 2027-01-26 → 2026-09-28 (-120d) |  |  |  |
| SDR-2-CON-SE-ZA-1700 | Manhole Installation | 2027-01-03 → 2026-07-15 A (-172d) | 2027-01-26 → 2026-09-28 (-120d) | 0% → 75% | 17d → 184d |  |
| 4 | **Testing** | 2027-01-27 → 2026-08-27 (-153d) | 2027-02-20 → 2026-12-08 (-74d) |  |  |  |
| SDR-2-CON-SE-ZA-1710 | Testing | 2027-01-27 → 2026-08-27 A (-153d) | 2027-02-20 → 2026-12-08 (-74d) | 0% → 30% | 17d → 80d | SDR-2-CON-ST-ZA-1300, SDR-2-CON-RW-ZA-2370, SDR-2-CON-SE-ZA-1700, SDR-2-CON-SE-ZA-1700 FF → SDR-2-CON-ST-ZA-1300 FF, SDR-2-CON-RW-ZA-2370 FF |
| 5 | **Backfilling** | 2027-02-28 → 2026-12-15 (-75d) | 2027-03-28 → 2027-01-07 (-80d) |  |  |  |
| SDR-2-CON-SE-ZA-1740 | Backfilling | 2027-02-28 → 2026-12-15 (-75d) | 2027-03-28 → 2027-01-07 (-80d) |  | 17d → 80d |  |
| 7 | **LINE 8 AND LINE 9 ( PH2-A-MCF0 )** | 2026-10-14 → 2026-06-23 (-113d) | 2027-03-27 → 2026-10-29 (-149d) |  |  |  |
| 7 | **Pipes Work** | 2026-10-14 → 2026-06-23 (-113d) | 2027-03-27 → 2026-10-22 (-156d) |  |  |  |
| 1 | **Excavation** | 2026-10-14 → 2026-06-23 (-113d) | 2026-12-13 → 2026-07-13 (-153d) |  |  |  |
| SDR-2-CON-SE-ZA-2540 | Excavation for GRP Pipe 200mm Diameter Section 1 | 2026-10-14 → 2026-06-23 A (-113d) | 2026-11-07 → 2026-07-02 A (-128d) | 0% → 100% | 15d → none |  |
| SDR-2-CON-SE-ZA-1760 | Excavation for GRP Pipe 200mm Diameter Section 2 | 2026-11-19 → 2026-07-04 A (-138d) | 2026-12-13 → 2026-07-13 A (-153d) | 0% → 100% | 8d → none | SDR-2-CON-RW-ZA-2480, SDR-2-CON-SE-ZA-2540 FS+3d → SDR-2-CON-SE-ZA-2540 FS+3d |
| 5 | **bedding Works** | 2026-12-14 → 2026-07-14 (-153d) | 2027-01-06 → 2026-07-27 (-163d) |  |  |  |
| SDR-2-CON-SE-ZA-1820 | Sand bedding for GRP Pipe 200mm Diameter | 2026-12-14 → 2026-07-14 A (-153d) | 2027-01-06 → 2026-07-27 A (-163d) | 0% → 100% | 11d → none | SDR-2-CON-RW-ZG-1950, SDR-2-CON-SE-ZA-1760 → SDR-2-CON-SE-ZA-1760, SDR-2-CON-RW-ZG-1950 SS |
| 2 | **Pipes Laying** | 2027-01-07 → 2026-07-27 (-164d) | 2027-01-31 → 2026-09-28 (-125d) |  |  |  |
| SDR-2-CON-SE-ZA-1770 | 200 mm GRP Pipe Laying | 2027-01-07 → 2026-07-27 A (-164d) | 2027-01-31 → 2026-09-28 (-125d) | 0% → 75% | 11d → 139d | SDR-2-CON-RW-ZG-2500, SDR-2-CON-SE-ZA-1760, SDR-2-CON-SE-ZA-1820 → SDR-2-CON-SE-ZA-1760, SDR-2-CON-SE-ZA-1820, SDR-2-CON-RW-ZG-2500 FF |
| 3 | **Testing** | 2027-02-01 → 2026-08-18 (-167d) | 2027-02-25 → 2026-09-28 (-150d) |  |  |  |
| SDR-2-CON-SE-ZA-1780 | Testing of 200 mm GRP Pipe. | 2027-02-01 → 2026-08-18 A (-167d) | 2027-02-25 → 2026-09-28 (-150d) | 0% → 60% | 11d → 139d | SDR-2-CON-SE-ZA-1770 → SDR-2-CON-SE-ZA-1770 FF |
| 6 | **Backfilling** | 2027-02-27 → 2026-09-29 (-151d) | 2027-03-27 → 2026-10-22 (-156d) |  |  |  |
| SDR-2-CON-SE-ZA-1830 | Backfilling of 200 mm GRP Pipe. | 2027-02-27 → 2026-09-29 (-151d) | 2027-03-27 → 2026-10-22 (-156d) |  | 11d → 139d |  |
| 4 | **Manholes** | 2026-10-14 → 2026-06-23 (-113d) | 2027-03-25 → 2026-10-29 (-147d) |  |  |  |
| 1 | **Excavation** | 2026-10-14 → 2026-06-23 (-113d) | 2026-12-05 → 2026-07-14 (-144d) |  |  |  |
| SDR-2-CON-SE-ZA-2550 | Excavation for manhole. Section 1 | 2026-10-14 → 2026-06-23 A (-113d) | 2026-11-07 → 2026-06-30 A (-130d) | 0% → 100% | 19d → none |  |
| SDR-2-CON-SE-ZA-1790 | Excavation for manhole. Section 2 | 2026-11-11 → 2026-07-01 A (-133d) | 2026-12-05 → 2026-07-14 A (-144d) | 0% → 100% | 19d → none | SDR-2-CON-RW-ZA-3410, SDR-2-CON-SE-ZA-2550 FS+3d → SDR-2-CON-SE-ZA-2550 FS+3d |
| 2 | **bedding Works** | 2026-12-06 → 2026-07-01 (-158d) | 2026-12-29 → 2026-07-20 (-162d) |  |  |  |
| SDR-2-CON-SE-ZA-1850 | Sand bedding for manhole. | 2026-12-06 → 2026-07-01 A (-158d) | 2026-12-29 → 2026-07-20 A (-162d) | 0% → 100% | 19d → none |  |
| 3 | **Install Manholes** | 2026-12-30 → 2026-07-08 (-175d) | 2027-01-23 → 2026-09-28 (-117d) |  |  |  |
| SDR-2-CON-SE-ZA-1800 | Manhole Installation | 2026-12-30 → 2026-07-08 A (-175d) | 2027-01-23 → 2026-09-28 (-117d) | 0% → 75% | 19d → 140d |  |
| 4 | **Testing** | 2027-01-24 → 2026-08-27 (-150d) | 2027-02-16 → 2026-09-29 (-140d) |  |  |  |
| SDR-2-CON-SE-ZA-1810 | Testing | 2027-01-24 → 2026-08-27 A (-150d) | 2027-02-16 → 2026-09-29 (-140d) | 0% → 30% | 19d → 140d | SDR-2-CON-SE-ZA-1800, SDR-2-CON-SE-ZA-1800 FF → SDR-2-CON-SE-ZA-1800 |
| 5 | **Backfilling** | 2027-03-01 → 2026-10-10 (-142d) | 2027-03-25 → 2026-10-29 (-147d) |  |  |  |

| ID | Task | Start | Finish | Complete | Total float | Predecessors |
| --- | --- | --- | --- | --- | --- | --- |
| SDR-2-CON-SE-ZA-1840 | Backfilling | 2027-03-01 → 2026-10-10 (-142d) | 2027-03-25 → 2026-10-29 (-147d) |  | 19d → 140d |  |
| 8 | **LINE 10 AND LINE 11 ( PH2-A-MCG0 )** | 2026-10-01 → 2026-06-16 (-107d) | 2027-03-17 → 2027-01-21 (-55d) |  |  |  |
| 7 | **Pipes Work** | 2026-10-01 → 2026-06-28 (-95d) | 2027-03-17 → 2027-01-10 (-66d) |  |  |  |
| 1 | **Excavation** | 2026-10-01 → 2026-06-28 (-95d) | 2026-11-22 → 2026-07-13 (-132d) |  |  |  |
| SDR-2-CON-SE-ZA-2560 | Excavation for GRP Pipe 200mm Diameter Section 1 | 2026-10-01 → 2026-06-28 A (-95d) | 2026-10-25 → 2026-07-08 A (-109d) | 0% → 100% | 17d → none |  |
| SDR-2-CON-SE-ZA-1860 | Excavation for GRP Pipe 200mm Diameter Section 2 | 2026-10-29 → 2026-07-01 A (-120d) | 2026-11-22 → 2026-07-13 A (-132d) | 0% → 100% | 17d → none |  |
| 5 | **bedding Works** | 2026-11-23 → 2026-07-14 (-132d) | 2026-12-16 → 2026-07-27 (-142d) |  |  |  |
| SDR-2-CON-SE-ZA-1920 | Sand bedding for GRP Pipe 200mm Diameter | 2026-11-23 → 2026-07-14 A (-132d) | 2026-12-16 → 2026-07-27 A (-142d) | 0% → 100% | 19d → none | SDR-2-CON-RW-ZG-1950, SDR-2-CON-SE-ZA-1860 → SDR-2-CON-SE-ZA-1860, SDR-2-CON-RW-ZG-1950 SS |
| 2 | **Pipes Laying** | 2026-12-17 → 2026-07-27 (-143d) | 2027-01-10 → 2026-09-28 (-104d) |  |  |  |
| SDR-2-CON-SE-ZA-1870 | 200 mm GRP Pipe Laying | 2026-12-17 → 2026-07-27 A (-143d) | 2027-01-10 → 2026-09-28 (-104d) | 0% → 75% | 19d → 129d |  |
| 3 | **Testing** | 2027-01-23 → 2026-08-27 (-149d) | 2027-02-15 → 2026-12-17 (-60d) |  |  |  |
| SDR-2-CON-SE-ZA-1880 | Testing of 200 mm GRP Pipe. | 2027-01-23 → 2026-08-27 A (-149d) | 2027-02-15 → 2026-12-17 (-60d) | 0% → 30% | 9d → 61d | SDR-2-CON-ST-ZA-6160, SDR-2-CON-RW-ZA-2740, SDR-2-CON-SE-ZA-1870 → SDR-2-CON-ST-ZA-6160, SDR-2-CON-RW-ZA-2740, SDR-2-CON-SE-ZA-1870 FF |
| 6 | **Backfilling** | 2027-02-16 → 2026-12-17 (-61d) | 2027-03-17 → 2027-01-10 (-66d) |  |  |  |
| SDR-2-CON-SE-ZA-1930 | Backfilling of 200 mm GRP Pipe. | 2027-02-16 → 2026-12-17 (-61d) | 2027-03-17 → 2027-01-10 (-66d) |  | 9d → 61d |  |
| 4 | **Manholes** | 2026-10-01 → 2026-06-16 (-107d) | 2027-03-14 → 2027-01-21 (-52d) |  |  |  |
| 1 | **Excavation** | 2026-10-01 → 2026-06-16 (-107d) | 2026-11-18 → 2026-07-15 (-126d) |  |  |  |
| SDR-2-CON-SE-ZA-2570 | Excavation for manhole. Section 1 | 2026-10-01 → 2026-06-16 A (-107d) | 2026-10-25 → 2026-07-01 A (-116d) | 0% → 100% | 21d → none |  |
| SDR-2-CON-SE-ZA-1890 | Excavation for manhole. Section 2 | 2026-10-26 → 2026-07-01 A (-117d) | 2026-11-18 → 2026-07-15 A (-126d) | 0% → 100% | 21d → none |  |
| 2 | **bedding Works** | 2026-11-19 → 2026-07-14 (-128d) | 2026-12-13 → 2026-07-27 (-139d) |  |  |  |
| SDR-2-CON-SE-ZA-1950 | Sand bedding for manhole. | 2026-11-19 → 2026-07-14 A (-128d) | 2026-12-13 → 2026-07-27 A (-139d) | 0% → 100% | 21d → none |  |
| 3 | **Install Manholes** | 2026-12-14 → 2026-07-27 (-140d) | 2027-01-06 → 2026-09-28 (-100d) |  |  |  |
| SDR-2-CON-SE-ZA-1900 | Manhole Installation | 2026-12-14 → 2026-07-27 A (-140d) | 2027-01-06 → 2026-09-28 (-100d) | 0% → 75% | 21d → 184d |  |
| 4 | **Testing** | 2027-01-07 → 2026-08-27 (-133d) | 2027-01-31 → 2026-12-17 (-45d) |  |  |  |
| SDR-2-CON-SE-ZA-1910 | Testing | 2027-01-07 → 2026-08-27 A (-133d) | 2027-01-31 → 2026-12-17 (-45d) | 0% → 30% | 21d → 61d | SDR-2-CON-ST-ZA-6160, SDR-2-CON-SE-ZA-1900, SDR-2-CON-SE-ZA-1900 FF → SDR-2-CON-ST-ZA-6160 |
| 5 | **Backfilling** | 2027-02-13 → 2026-12-29 (-46d) | 2027-03-14 → 2027-01-21 (-52d) |  |  |  |
| SDR-2-CON-SE-ZA-1940 | Backfilling | 2027-02-13 → 2026-12-29 (-46d) | 2027-03-14 → 2027-01-21 (-52d) |  | 21d → 61d |  |
| 9 | **LINE 12 AND LINE 13 ( PH2-A-MCH0 )** | 2026-10-07 → 2026-06-22 (-107d) | 2027-03-27 → 2026-11-16 (-131d) |  |  |  |
| 7 | **Pipes Work** | 2026-10-07 → 2026-06-22 (-107d) | 2027-03-07 → 2026-11-16 (-111d) |  |  |  |
| 1 | **Excavation** | 2026-10-07 → 2026-06-22 (-107d) | 2026-11-28 → 2026-07-13 (-138d) |  |  |  |
| SDR-2-CON-SE-ZA-2580 | Excavation for GRP Pipe 200mm Diameter Section 1 | 2026-10-07 → 2026-06-22 A (-107d) | 2026-10-31 → 2026-06-30 A (-123d) | 0% → 100% | 7d → none |  |
| SDR-2-CON-SE-ZA-1960 | Excavation for GRP Pipe 200mm Diameter Section 2 | 2026-11-04 → 2026-07-01 A (-126d) | 2026-11-28 → 2026-07-13 A (-138d) | 0% → 100% | 7d → none | SDR-2-CON-RW-ZA-3420, SDR-2-CON-RW-ZA-1330, SDR-2-CON-RW-ZA-3410, SDR-2-CON-SE-ZA-2580 FS+3d → SDR-2-CON-SE-ZA-2580 FS+3d, SDR-2-CON-RW-ZA-1330 |
| 5 | **bedding Works** | 2026-11-29 → 2026-07-14 (-138d) | 2026-12-22 → 2026-07-22 (-153d) |  |  |  |
| SDR-2-CON-SE-ZA-2020 | Sand bedding for GRP Pipe 200mm Diameter | 2026-11-29 → 2026-07-14 A (-138d) | 2026-12-22 → 2026-07-22 A (-153d) | 0% → 100% | 7d → none |  |
| 2 | **Pipes Laying** | 2026-12-23 → 2026-07-25 (-151d) | 2027-01-16 → 2026-09-28 (-110d) |  |  |  |
| SDR-2-CON-SE-ZA-1970 | 200 mm GRP Pipe Laying | 2026-12-23 → 2026-07-25 A (-151d) | 2027-01-16 → 2026-09-28 (-110d) | 0% → 70% | 7d → 101d |  |
| 3 | **Testing** | 2027-01-17 → 2026-09-29 (-110d) | 2027-02-09 → 2026-10-22 (-110d) |  |  |  |
| SDR-2-CON-SE-ZA-1980 | Testing of 200 mm GRP Pipe. | 2027-01-17 → 2026-09-29 (-110d) | 2027-02-09 → 2026-10-22 (-110d) |  | 7d → 101d |  |
| 6 | **Backfilling** | 2027-02-10 → 2026-10-24 (-109d) | 2027-03-07 → 2026-11-16 (-111d) |  |  |  |
| SDR-2-CON-SE-ZA-2030 | Backfilling of 200 mm GRP Pipe. | 2027-02-10 → 2026-10-24 (-109d) | 2027-03-07 → 2026-11-16 (-111d) |  | 7d → 101d |  |
| 4 | **Manholes** | 2026-11-01 → 2026-07-01 (-123d) | 2027-03-27 → 2026-11-10 (-137d) |  |  |  |
| 1 | **Excavation** | 2026-11-01 → 2026-07-01 (-123d) | 2026-12-19 → 2026-07-21 (-151d) |  |  |  |
| SDR-2-CON-SE-ZA-2590 | Excavation for manhole. Section 1 | 2026-11-01 → 2026-07-01 A (-123d) | 2026-11-24 → 2026-07-13 A (-134d) | 0% → 100% | 18d → none |  |
| SDR-2-CON-SE-ZA-1990 | Excavation for manhole. Section 2 | 2026-11-25 → 2026-07-14 A (-134d) | 2026-12-19 → 2026-07-21 A (-151d) | 0% → 100% | 18d → none |  |
| 2 | **bedding Works** | 2026-12-20 → 2026-07-14 (-159d) | 2027-01-12 → 2026-08-05 (-160d) |  |  |  |
| SDR-2-CON-SE-ZA-2050 | Sand bedding for manhole. | 2026-12-20 → 2026-07-14 A (-159d) | 2027-01-12 → 2026-08-05 A (-160d) | 0% → 100% | 18d → none |  |
| 3 | **Install Manholes** | 2027-01-13 → 2026-07-27 (-170d) | 2027-02-06 → 2026-09-28 (-131d) |  |  |  |
| SDR-2-CON-SE-ZA-2000 | Manhole Installation | 2027-01-13 → 2026-07-27 A (-170d) | 2027-02-06 → 2026-09-28 (-131d) | 0% → 70% | 18d → 130d |  |
| 4 | **Testing** | 2027-02-07 → 2026-09-29 (-131d) | 2027-03-03 → 2026-10-22 (-132d) |  |  |  |
| SDR-2-CON-SE-ZA-2010 | Testing | 2027-02-07 → 2026-09-29 (-131d) | 2027-03-03 → 2026-10-22 (-132d) |  | 18d → 130d |  |
| 5 | **Backfilling** | 2027-03-04 → 2026-10-24 (-131d) | 2027-03-27 → 2026-11-10 (-137d) |  |  |  |
| SDR-2-CON-SE-ZA-2040 | Backfilling | 2027-03-04 → 2026-10-24 (-131d) | 2027-03-27 → 2026-11-10 (-137d) |  | 18d → 130d |  |
| ZG | **ZONE G** | 2026-09-24 → 2026-05-18 (-129d) | 2027-03-25 → 2026-12-27 (-88d) |  |  |  |
| 3 | **LINE 49 AND LINE 51 ( PH2-G-MCE0 )** | 2026-10-14 → 2026-05-19 (-148d) | 2027-03-24 → 2026-10-07 (-168d) |  |  |  |
| 7 | **Pipes Work** | 2026-10-14 → 2026-06-01 (-135d) | 2027-03-15 → 2026-08-27 (-200d) |  |  |  |
| 1 | **Excavation** | 2026-10-14 → 2026-06-01 (-135d) | 2026-12-01 → 2026-06-15 (-169d) |  |  |  |
| SDR-2-CON-SE-ZA-2600 | Excavation for GRP Pipe 200mm Diameter Section 1 | 2026-10-14 → 2026-06-01 A (-135d) | 2026-11-07 → 2026-06-08 A (-152d) | 0% → 100% | 3d → none |  |
| SDR-2-CON-SE-ZA-2060 | Excavation for GRP Pipe 200mm Diameter Section 2 | 2026-11-08 → 2026-06-08 A (-153d) | 2026-12-01 → 2026-06-15 A (-169d) | 0% → 100% | 3d → none |  |
| 5 | **bedding Works** | 2026-12-02 → 2026-06-15 (-170d) | 2026-12-26 → 2026-06-25 (-184d) |  |  |  |
| SDR-2-CON-SE-ZA-2120 | Sand bedding for GRP Pipe 200mm Diameter | 2026-12-02 → 2026-06-15 A (-170d) | 2026-12-26 → 2026-06-25 A (-184d) | 0% → 100% | 18d → none |  |
| 2 | **Pipes Laying** | 2026-12-27 → 2026-06-22 (-188d) | 2027-01-19 → 2026-07-06 (-197d) |  |  |  |
| SDR-2-CON-SE-ZA-2070 | 200 mm GRP Pipe Laying | 2026-12-27 → 2026-06-22 A (-188d) | 2027-01-19 → 2026-07-06 A (-197d) | 0% → 100% | 18d → none |  |
| 3 | **Testing** | 2027-01-20 → 2026-07-07 (-197d) | 2027-02-13 → 2026-08-05 (-192d) |  |  |  |
| SDR-2-CON-SE-ZA-2080 | Testing of 200 mm GRP Pipe. | 2027-01-20 → 2026-07-07 A (-197d) | 2027-02-13 → 2026-08-05 A (-192d) | 0% → 100% | 18d → none | SDR-2-CON-ST-ZA-1300, SDR-2-CON-SE-ZA-2070 → SDR-2-CON-SE-ZA-2070 |
| 6 | **Backfilling** | 2027-02-14 → 2026-08-12 (-186d) | 2027-03-15 → 2026-08-27 (-200d) |  |  |  |
| SDR-2-CON-SE-ZA-2130 | Backfilling of 200 mm GRP Pipe. | 2027-02-14 → 2026-08-12 A (-186d) | 2027-03-15 → 2026-08-27 A (-200d) | 0% → 100% | 18d → none | SDR-2-CON-CC-ZG-1620, SDR-2-CON-SE-ZA-2080 → SDR-2-CON-SE-ZA-2080 |
| 4 | **Manholes** | 2026-10-14 → 2026-05-19 (-148d) | 2027-03-24 → 2026-10-07 (-168d) |  |  |  |
| 1 | **Excavation** | 2026-10-14 → 2026-05-19 (-148d) | 2026-12-05 → 2026-06-06 (-182d) |  |  |  |
| SDR-2-CON-SE-ZA-2610 | Excavation for manhole. Section 1 | 2026-10-14 → 2026-05-19 A (-148d) | 2026-11-07 → 2026-06-01 A (-159d) | 0% → 100% | 16d → none |  |
| SDR-2-CON-SE-ZA-2090 | Excavation for manhole. Section 2 | 2026-11-11 → 2026-05-31 A (-164d) | 2026-12-05 → 2026-06-06 A (-182d) | 0% → 100% | 16d → none |  |
| 2 | **bedding Works** | 2026-12-06 → 2026-06-01 (-188d) | 2026-12-29 → 2026-06-11 (-201d) |  |  |  |

| ID | Task | Start | Finish | Complete | Total float | Predecessors |
| --- | --- | --- | --- | --- | --- | --- |
| SDR-2-CON-SE-ZA-2150 | Sand bedding for manhole. | 2026-12-06 → 2026-06-01 A (-188d) | 2026-12-29 → 2026-06-11 A (-201d) | 0% → 100% | 16d → none |  |
| 3 | **Install Manholes** | 2026-12-30 → 2026-05-31 (-213d) | 2027-01-23 → 2026-08-31 (-145d) |  |  |  |
| SDR-2-CON-SE-ZA-2100 | Manhole Installation | 2026-12-30 → 2026-05-31 A (-213d) | 2027-01-23 → 2026-08-31 A (-145d) | 0% → 100% | 16d → none |  |
| 4 | **Testing** | 2027-01-24 → 2026-09-07 (-139d) | 2027-02-16 → 2026-10-07 (-132d) |  |  |  |
| SDR-2-CON-SE-ZA-2110 | Testing | 2027-01-24 → 2026-09-07 A (-139d) | 2027-02-16 → 2026-10-07 (-132d) | 0% → 10% | 16d → 158d |  |
| 5 | **Backfilling** | 2027-02-24 → 2026-08-20 (-188d) | 2027-03-24 → 2026-08-31 (-205d) |  |  |  |
| SDR-2-CON-SE-ZA-2140 | Backfilling | 2027-02-24 → 2026-08-20 A (-188d) | 2027-03-24 → 2026-08-31 A (-205d) | 0% → 100% | 16d → none | SDR-2-CON-SE-ZA-2110 FS+5d → SDR-2-CON-SE-ZA-2110 SS |
| 4 | **LINE 50 ( PH2-G-MCD0 )** | 2026-10-20 → 2026-05-23 (-150d) | 2027-03-25 → 2026-12-27 (-88d) |  |  |  |
| 7 | **Pipes Work** | 2026-10-20 → 2026-06-01 (-141d) | 2027-03-24 → 2026-12-27 (-87d) |  |  |  |
| 1 | **Excavation** | 2026-10-20 → 2026-06-01 (-141d) | 2026-12-10 → 2026-06-15 (-178d) |  |  |  |
| SDR-2-CON-SE-ZA-2620 | Excavation for GRP Pipe 200mm Diameter Section 1 | 2026-10-20 → 2026-06-01 A (-141d) | 2026-11-12 → 2026-06-08 A (-157d) | 0% → 100% | 16d → none |  |
| SDR-2-CON-SE-ZA-2160 | Excavation for GRP Pipe 200mm Diameter Section 2 | 2026-11-17 → 2026-06-08 A (-162d) | 2026-12-10 → 2026-06-15 A (-178d) | 0% → 100% | 16d → none |  |
| 5 | **bedding Works** | 2026-12-12 → 2026-06-15 (-180d) | 2027-01-04 → 2026-07-16 (-172d) |  |  |  |
| SDR-2-CON-SE-ZA-2220 | Sand bedding for GRP Pipe 200mm Diameter | 2026-12-12 → 2026-06-15 A (-180d) | 2027-01-04 → 2026-07-16 A (-172d) | 0% → 100% | 16d → none |  |
| 2 | **Pipes Laying** | 2027-01-05 → 2026-06-22 (-197d) | 2027-01-28 → 2026-07-20 (-192d) |  |  |  |
| SDR-2-CON-SE-ZA-2170 | 200 mm GRP Pipe Laying | 2027-01-05 → 2026-06-22 A (-197d) | 2027-01-28 → 2026-07-20 A (-192d) | 0% → 100% | 16d → none |  |
| 3 | **Testing** | 2027-01-30 → 2026-09-07 (-145d) | 2027-02-23 → 2026-12-27 (-58d) |  |  |  |
| SDR-2-CON-SE-ZA-2180 | Testing of 200 mm GRP Pipe. | 2027-01-30 → 2026-09-07 A (-145d) | 2027-02-23 → 2026-12-27 (-58d) | 0% → 10% | 16d → 89d |  |
| 6 | **Backfilling** | 2027-02-24 → 2026-08-20 (-188d) | 2027-03-24 → 2026-08-31 (-205d) |  |  |  |
| SDR-2-CON-SE-ZA-2230 | Backfilling of 200 mm GRP Pipe. | 2027-02-24 → 2026-08-20 A (-188d) | 2027-03-24 → 2026-08-31 A (-205d) | 0% → 100% | 16d → none | SDR-2-CON-SE-ZA-2180 → SDR-2-CON-SE-ZA-2180 SS |
| 4 | **Manholes** | 2026-10-20 → 2026-05-23 (-150d) | 2027-03-25 → 2026-10-07 (-169d) |  |  |  |
| 1 | **Excavation** | 2026-10-20 → 2026-05-23 (-150d) | 2026-12-10 → 2026-06-06 (-187d) |  |  |  |
| SDR-2-CON-SE-ZA-2630 | Excavation for manhole. Section 1 | 2026-10-20 → 2026-05-23 A (-150d) | 2026-11-12 → 2026-06-03 A (-162d) | 0% → 100% | 20d → none |  |
| SDR-2-CON-SE-ZA-2190 | Excavation for manhole. Section 2 | 2026-11-17 → 2026-06-01 A (-169d) | 2026-12-10 → 2026-06-06 A (-187d) | 0% → 100% | 20d → none |  |
| 2 | **bedding Works** | 2026-12-12 → 2026-06-01 (-194d) | 2027-01-04 → 2026-06-08 (-210d) |  |  |  |
| SDR-2-CON-SE-ZA-2250 | Sand bedding for manhole. | 2026-12-12 → 2026-06-01 A (-194d) | 2027-01-04 → 2026-06-08 A (-210d) | 0% → 100% | 20d → none |  |
| 3 | **Install Manholes** | 2027-01-05 → 2026-06-15 (-204d) | 2027-01-28 → 2026-06-27 (-215d) |  |  |  |
| SDR-2-CON-SE-ZA-2200 | Manhole Installation | 2027-01-05 → 2026-06-15 A (-204d) | 2027-01-28 → 2026-06-27 A (-215d) | 0% → 100% | 20d → none |  |
| 4 | **Testing** | 2027-01-30 → 2026-09-07 (-145d) | 2027-02-23 → 2026-10-07 (-139d) |  |  |  |
| SDR-2-CON-SE-ZA-2210 | Testing | 2027-01-30 → 2026-09-07 A (-145d) | 2027-02-23 → 2026-10-07 (-139d) | 0% → 10% | 20d → 152d |  |
| 5 | **Backfilling** | 2027-03-02 → 2026-08-20 (-194d) | 2027-03-25 → 2026-08-31 (-206d) |  |  |  |
| SDR-2-CON-SE-ZA-2240 | Backfilling | 2027-03-02 → 2026-08-20 A (-194d) | 2027-03-25 → 2026-08-31 A (-206d) | 0% → 100% | 20d → none | SDR-2-CON-SE-ZA-2210 FS+5d → SDR-2-CON-SE-ZA-2210 SS |
| 5 | **LINE 52 AND LINE 53 ( PH2-G-MCF0 )** | 2026-09-24 → 2026-05-21 (-126d) | 2027-02-25 → 2026-10-07 (-141d) |  |  |  |
| 7 | **Pipes Work** | 2026-09-24 → 2026-05-21 (-126d) | 2027-02-21 → 2026-08-31 (-174d) |  |  |  |
| 1 | **Excavation** | 2026-09-24 → 2026-05-21 (-126d) | 2026-11-15 → 2026-06-06 (-162d) |  |  |  |
| SDR-2-CON-SE-ZA-2640 | Excavation for GRP Pipe 200mm Diameter Section 1 | 2026-09-24 → 2026-05-21 A (-126d) | 2026-10-18 → 2026-06-01 A (-139d) | 0% → 100% | 13d → none | SDR-2-CON-ST-ZA-6290, SDR-2-CON-ST-ZA-5530 → SDR-2-CON-ST-ZA-5530 |
| SDR-2-CON-SE-ZA-2260 | Excavation for GRP Pipe 200mm Diameter Section 2 | 2026-10-22 → 2026-06-01 A (-143d) | 2026-11-15 → 2026-06-06 A (-162d) | 0% → 100% | 13d → none |  |
| 5 | **bedding Works** | 2026-11-16 → 2026-05-21 (-179d) | 2026-12-09 → 2026-06-08 (-184d) |  |  |  |
| SDR-2-CON-SE-ZA-2320 | Sand bedding for GRP Pipe 200mm Diameter | 2026-11-16 → 2026-05-21 A (-179d) | 2026-12-09 → 2026-06-08 A (-184d) | 0% → 100% | 20d → none |  |
| 2 | **Pipes Laying** | 2026-12-10 → 2026-06-09 (-184d) | 2027-01-03 → 2026-07-01 (-186d) |  |  |  |
| SDR-2-CON-SE-ZA-2270 | 200 mm GRP Pipe Laying | 2026-12-10 → 2026-06-09 A (-184d) | 2027-01-03 → 2026-07-01 A (-186d) | 0% → 100% | 20d → none |  |
| 3 | **Testing** | 2027-01-04 → 2026-08-20 (-137d) | 2027-01-27 → 2026-08-27 (-153d) |  |  |  |
| SDR-2-CON-SE-ZA-2280 | Testing of 200 mm GRP Pipe. | 2027-01-04 → 2026-08-20 A (-137d) | 2027-01-27 → 2026-08-27 A (-153d) | 0% → 100% | 20d → none |  |
| 6 | **Backfilling** | 2027-01-28 → 2026-08-26 (-155d) | 2027-02-21 → 2026-08-31 (-174d) |  |  |  |
| SDR-2-CON-SE-ZA-2330 | Backfilling of 200 mm GRP Pipe. | 2027-01-28 → 2026-08-26 A (-155d) | 2027-02-21 → 2026-08-31 A (-174d) | 0% → 100% | 20d → none |  |
| 4 | **Manholes** | 2026-09-24 → 2026-05-23 (-124d) | 2027-02-25 → 2026-10-07 (-141d) |  |  |  |
| 1 | **Excavation** | 2026-09-24 → 2026-05-23 (-124d) | 2026-11-15 → 2026-06-06 (-162d) |  |  |  |
| SDR-2-CON-SE-ZA-2650 | Excavation for manhole. Section 1 | 2026-09-24 → 2026-05-23 A (-124d) | 2026-10-18 → 2026-06-03 A (-137d) | 0% → 100% | 22d → none |  |
| SDR-2-CON-SE-ZA-2290 | Excavation for manhole. Section 2 | 2026-10-22 → 2026-06-01 A (-143d) | 2026-11-15 → 2026-06-06 A (-162d) | 0% → 100% | 22d → none |  |
| 2 | **bedding Works** | 2026-11-16 → 2026-05-30 (-170d) | 2026-12-09 → 2026-06-08 (-184d) |  |  |  |
| SDR-2-CON-SE-ZA-2350 | Sand bedding for manhole. | 2026-11-16 → 2026-05-30 A (-170d) | 2026-12-09 → 2026-06-08 A (-184d) | 0% → 100% | 22d → none |  |
| 3 | **Install Manholes** | 2026-12-10 → 2026-06-11 (-182d) | 2027-01-03 → 2026-06-22 (-195d) |  |  |  |
| SDR-2-CON-SE-ZA-2300 | Manhole Installation | 2026-12-10 → 2026-06-11 A (-182d) | 2027-01-03 → 2026-06-22 A (-195d) | 0% → 100% | 22d → none |  |
| 4 | **Testing** | 2027-01-04 → 2026-09-07 (-119d) | 2027-01-27 → 2026-10-07 (-112d) |  |  |  |
| SDR-2-CON-SE-ZA-2310 | Testing | 2027-01-04 → 2026-09-07 A (-119d) | 2027-01-27 → 2026-10-07 (-112d) | 0% → 10% | 22d → 151d |  |
| 5 | **Backfilling** | 2027-02-01 → 2026-08-20 (-165d) | 2027-02-25 → 2026-08-31 (-178d) |  |  |  |
| SDR-2-CON-SE-ZA-2340 | Backfilling | 2027-02-01 → 2026-08-20 A (-165d) | 2027-02-25 → 2026-08-31 A (-178d) | 0% → 100% | 22d → none | SDR-2-CON-SE-ZA-2310 FS+3d → SDR-2-CON-SE-ZA-2310 SS |
| 6 | **LINE 54 AND LINE 55 ( PH2-G-MCG0 )** | 2026-10-08 → 2026-05-18 (-143d) | 2027-03-23 → 2026-10-07 (-167d) |  |  |  |
| 7 | **Pipes Work** | 2026-10-08 → 2026-06-08 (-122d) | 2027-03-14 → 2026-08-31 (-195d) |  |  |  |
| 1 | **Excavation** | 2026-10-08 → 2026-06-08 (-122d) | 2026-11-29 → 2026-06-29 (-153d) |  |  |  |
| SDR-2-CON-SE-ZA-2660 | Excavation for GRP Pipe 200mm Diameter Section 1 | 2026-10-08 → 2026-06-08 A (-122d) | 2026-11-01 → 2026-06-21 A (-133d) | 0% → 100% | 0d → none |  |
| SDR-2-CON-SE-ZA-2360 | Excavation for GRP Pipe 200mm Diameter Section 2 | 2026-11-05 → 2026-06-22 A (-136d) | 2026-11-29 → 2026-06-29 A (-153d) | 0% → 100% | 0d → none |  |
| 5 | **bedding Works** | 2026-11-30 → 2026-06-26 (-157d) | 2026-12-23 → 2026-07-01 (-175d) |  |  |  |
| SDR-2-CON-SE-ZA-2420 | Sand bedding for GRP Pipe 200mm Diameter | 2026-11-30 → 2026-06-26 A (-157d) | 2026-12-23 → 2026-07-01 A (-175d) | 0% → 100% | 15d → none |  |
| 2 | **Pipes Laying** | 2026-12-24 → 2026-06-25 (-182d) | 2027-01-17 → 2026-07-04 (-197d) |  |  |  |
| SDR-2-CON-SE-ZA-2370 | 200 mm GRP Pipe Laying | 2026-12-24 → 2026-06-25 A (-182d) | 2027-01-17 → 2026-07-04 A (-197d) | 0% → 100% | 15d → none |  |
| 3 | **Testing** | 2027-01-19 → 2026-08-13 (-159d) | 2027-02-11 → 2026-08-20 (-175d) |  |  |  |
| SDR-2-CON-SE-ZA-2380 | Testing of 200 mm GRP Pipe. | 2027-01-19 → 2026-08-13 A (-159d) | 2027-02-11 → 2026-08-20 A (-175d) | 0% → 100% | 14d → none | SDR-2-CON-RW-ZG-1060, SDR-2-CON-SE-ZA-2370 → SDR-2-CON-SE-ZA-2370, SDR-2-CON-RW-ZG-1060 SS |
| 6 | **Backfilling** | 2027-02-13 → 2026-08-20 (-177d) | 2027-03-14 → 2026-08-31 (-195d) |  |  |  |
| SDR-2-CON-SE-ZA-2430 | Backfilling of 200 mm GRP Pipe. | 2027-02-13 → 2026-08-20 A (-177d) | 2027-03-14 → 2026-08-31 A (-195d) | 0% → 100% | 14d → none |  |

| ID | Task | Start | Finish | Complete | Total float | Predecessors |
| --- | --- | --- | --- | --- | --- | --- |
| 4 | **Manholes** | 2026-10-08 → 2026-05-18 (-143d) | 2027-03-23 → 2026-10-07 (-167d) |  |  |  |
| 1 | **Excavation** | 2026-10-08 → 2026-05-18 (-143d) | 2026-11-29 → 2026-06-06 (-176d) |  |  |  |
| SDR-2-CON-SE-ZA-2670 | Excavation for manhole. Section 1 | 2026-10-08 → 2026-05-18 A (-143d) | 2026-11-01 → 2026-05-31 A (-154d) | 0% → 100% | 17d → none |  |
| SDR-2-CON-SE-ZA-2390 | Excavation for manhole. Section 2 | 2026-11-05 → 2026-06-01 A (-157d) | 2026-11-29 → 2026-06-06 A (-176d) | 0% → 100% | 17d → none |  |
| 2 | **bedding Works** | 2026-11-30 → 2026-06-06 (-177d) | 2026-12-23 → 2026-06-14 (-192d) |  |  |  |
| SDR-2-CON-SE-ZA-2450 | Sand bedding for manhole. | 2026-11-30 → 2026-06-06 A (-177d) | 2026-12-23 → 2026-06-14 A (-192d) | 0% → 100% | 17d → none |  |
| 3 | **Install Manholes** | 2026-12-24 → 2026-06-27 (-180d) | 2027-01-17 → 2026-07-05 (-196d) |  |  |  |
| SDR-2-CON-SE-ZA-2400 | Manhole Installation | 2026-12-24 → 2026-06-27 A (-180d) | 2027-01-17 → 2026-07-05 A (-196d) | 0% → 100% | 17d → none |  |
| 4 | **Testing** | 2027-01-18 → 2026-09-07 (-133d) | 2027-02-10 → 2026-10-07 (-126d) |  |  |  |
| SDR-2-CON-SE-ZA-2410 | Testing | 2027-01-18 → 2026-09-07 A (-133d) | 2027-02-10 → 2026-10-07 (-126d) | 0% → 10% | 17d → 164d |  |
| 5 | **Backfilling** | 2027-02-23 → 2026-08-20 (-187d) | 2027-03-23 → 2026-08-31 (-204d) |  |  |  |
| SDR-2-CON-SE-ZA-2440 | Backfilling | 2027-02-23 → 2026-08-20 A (-187d) | 2027-03-23 → 2026-08-31 A (-204d) | 0% → 100% | 17d → none | SDR-2-CON-SE-ZA-2410 FS+9d → SDR-2-CON-SE-ZA-2410 SS |
| TSE | **TSE Network** | 2026-11-16 → 2026-08-06 (-102d) | 2027-05-24 → 2027-05-05 (-19d) |  |  |  |
| ZA | **ZONE A** | 2026-11-19 → 2026-08-06 (-105d) | 2027-05-04 → 2027-05-05 (+1d) |  |  |  |
| 1 | **TSE NETWORK IN ( PH2-COL-MC10 )** | 2026-11-19 → 2026-08-09 (-102d) | 2027-04-24 → 2027-04-05 (-19d) |  |  |  |
| 6 | **Pipes Work** | 2026-11-19 → 2026-08-09 (-102d) | 2027-04-15 → 2027-04-05 (-10d) |  |  |  |
| 1 | **Excavation** | 2026-11-19 → 2026-08-09 (-102d) | 2027-01-05 → 2026-12-07 (-29d) |  |  |  |
| SDR-2-CON-TS-ZA-1000 | Excavation for TSE HDPE Pipes 225 mm Section 2 | 2026-12-14 → 2026-08-09 A (-127d) | 2027-01-05 → 2026-12-07 (-29d) |  | 1d → 8d | SDR-2-CON-CC-ZG-1650, SDR-2-CON-RW-ZG-2300, SDR-2-CON-RW-ZG-1110, SDR-2-CON-TS-ZA-3200 FS+1d → SDR-2-CON-RW-ZG-2300, SDR-2-CON-TS-ZA-3200 FF, SDR-2-CON-CC-ZG-1650 FF, SDR-2-CON-RW-ZG-1110 FF |
| SDR-2-CON-TS-ZA-3200 | Excavation for TSE HDPE Pipes 225 mm Section 1 | 2026-11-19 → 2026-08-09 A (-102d) | 2026-12-12 → 2026-11-01 (-41d) | 0% → 65% | 1d → 39d | SDR-2-CON-RW-ZG-1390, SDR-2-CON-RW-ZA-2350, SDR-2-PRO-ST-M-1010, SDR-2-PRO-ST-E-1060, SDR-2-CON-SE-ZA-1000 → SDR-2-CON-SE-ZA-1000, SDR-2-PRO-ST-M-1010, SDR-2-PRO-ST-E-1060, SDR-2-CON-RW-ZG-1390 FF, SDR-2-CON-RW-ZA-2350 FF |
| 6 | **bedding Works** | 2027-01-11 → 2026-12-08 (-34d) | 2027-02-03 → 2026-12-31 (-34d) |  |  |  |
| SDR-2-CON-TS-ZA-1900 | Sand bedding for TSE HDPE Pipes 225 mm | 2027-01-11 → 2026-12-08 (-34d) | 2027-02-03 → 2026-12-31 (-34d) |  | 18d → 47d | SDR-2-CON-RW-ZG-1210 FS+4d, SDR-2-CON-TS-ZA-1000 FS+4d → SDR-2-CON-RW-ZG-1210 FS+4d, SDR-2-CON-TS-ZA-1000 |
| 2 | **Pipes Laying** | 2027-02-04 → 2027-01-25 (-10d) | 2027-03-01 → 2027-02-17 (-12d) |  |  |  |
| SDR-2-CON-TS-ZA-1010 | Install TSE 225 mm HDPE Pipe | 2027-02-04 → 2027-01-25 (-10d) | 2027-03-01 → 2027-02-17 (-12d) |  | 18d → 27d | SDR-2-CON-ST-ZA-4200, SDR-2-CON-CC-ZA-1820, SDR-2-CON-TS-ZA-1000, SDR-2-PRO-MAL-M-1010, SDR-2-CON-TS-ZA-1900 → SDR-2-CON-ST-ZA-4200, SDR-2-CON-CC-ZA-1820 SS, SDR-2-CON-TS-ZA-1000, SDR-2-PRO-MAL-M-1010, SDR-2-CON-TS-ZA-1900 |
| 5 | **Testing** | 2027-03-02 → 2027-02-18 (-12d) | 2027-03-22 → 2027-03-07 (-15d) |  |  |  |
| SDR-2-CON-TS-ZA-1080 | Testing of TSE HDPE Pipe 225 mm. | 2027-03-02 → 2027-02-18 (-12d) | 2027-03-22 → 2027-03-07 (-15d) |  | 18d → 27d |  |
| 7 | **Backfilling** | 2027-03-23 → 2027-03-08 (-15d) | 2027-04-15 → 2027-04-05 (-10d) |  |  |  |
| SDR-2-CON-TS-ZA-1910 | Backfilling of TSE HDPE Pipe 225 mm. | 2027-03-23 → 2027-03-08 (-15d) | 2027-04-15 → 2027-04-05 (-10d) |  | 18d → 27d |  |
| 3 | **Valve Chambers & Valves** | 2026-11-26 → 2026-11-09 (-17d) | 2027-04-24 → 2027-03-30 (-25d) |  |  |  |
| 3 | **Excavation** | 2026-11-26 → 2026-11-09 (-17d) | 2027-01-11 → 2026-12-24 (-18d) |  |  |  |
| SDR-2-CON-TS-ZA-3210 | Excavation for Valve Chambers Section 1 | 2026-11-26 → 2026-11-09 (-17d) | 2026-12-19 → 2026-12-01 (-18d) |  | 17d → 32d |  |
| SDR-2-CON-TS-ZA-1040 | Excavation for Valve Chambers Section 2 | 2026-12-20 → 2026-12-02 (-18d) | 2027-01-11 → 2026-12-24 (-18d) |  | 17d → 32d |  |
| 1 | **bedding Works** | 2027-01-19 → 2026-12-26 (-24d) | 2027-02-11 → 2027-01-18 (-24d) |  |  |  |
| SDR-2-CON-TS-ZA-1020 | Sand bedding for Valve Chambers | 2027-01-19 → 2026-12-26 (-24d) | 2027-02-11 → 2027-01-18 (-24d) |  | 11d → 32d | SDR-2-CON-TE-ZA-1840, SDR-2-CON-RW-ZG-1060, SDR-2-PRO-MAL-M-1020, SDR-2-CON-TS-ZA-1040 → SDR-2-CON-RW-ZG-1060, SDR-2-PRO-MAL-M-1020, SDR-2-CON-TS-ZA-1040 |
| 4 | **Install Chambers & Valves** | 2027-02-13 → 2027-01-19 (-25d) | 2027-03-14 → 2027-02-11 (-31d) |  |  |  |
| SDR-2-CON-TS-ZA-1050 | Valve Chambers & Valves Installation | 2027-02-13 → 2027-01-19 (-25d) | 2027-03-14 → 2027-02-11 (-31d) |  | 11d → 32d |  |
| 5 | **Testing** | 2027-03-15 → 2027-02-13 (-30d) | 2027-03-30 → 2027-03-01 (-29d) |  |  |  |
| SDR-2-CON-TS-ZA-1060 | Testing Chambers & Valves Installation | 2027-03-15 → 2027-02-13 (-30d) | 2027-03-30 → 2027-03-01 (-29d) |  | 11d → 32d |  |
| 6 | **Backfilling** | 2027-03-31 → 2027-03-02 (-29d) | 2027-04-24 → 2027-03-30 (-25d) |  |  |  |
| SDR-2-CON-TS-ZA-1070 | Backfilling Chambers & Valves Installation | 2027-03-31 → 2027-03-02 (-29d) | 2027-04-24 → 2027-03-30 (-25d) |  | 11d → 32d |  |
| 2 | **TSE NETWORK IN ( PH2-COL-MC20 )** | 2026-12-01 → 2026-11-15 (-16d) | 2027-04-14 → 2027-04-01 (-13d) |  |  |  |
| 6 | **Pipes Work** | 2026-12-01 → 2026-11-15 (-16d) | 2027-04-13 → 2027-03-28 (-16d) |  |  |  |
| 1 | **Excavation** | 2026-12-01 → 2026-11-15 (-16d) | 2027-01-16 → 2026-12-30 (-17d) |  |  |  |
| SDR-2-CON-TS-ZA-3220 | Excavation for TSE HDPE Pipes 225 mm Section 1 | 2026-12-01 → 2026-11-15 (-16d) | 2026-12-23 → 2026-12-07 (-16d) |  | 20d → 34d |  |
| SDR-2-CON-TS-ZA-2200 | Excavation for TSE HDPE Pipes 225 mm Section 2 | 2026-12-24 → 2026-12-08 (-16d) | 2027-01-16 → 2026-12-30 (-17d) |  | 20d → 34d |  |
| 6 | **bedding Works** | 2027-01-17 → 2026-12-31 (-17d) | 2027-02-09 → 2027-01-24 (-16d) |  |  |  |
| SDR-2-CON-TS-ZA-2280 | Sand bedding for TSE HDPE Pipes 225 mm | 2027-01-17 → 2026-12-31 (-17d) | 2027-02-09 → 2027-01-24 (-16d) |  | 20d → 34d |  |
| 2 | **Pipes Laying** | 2027-02-10 → 2027-01-25 (-16d) | 2027-03-07 → 2027-02-17 (-18d) |  |  |  |
| SDR-2-CON-TS-ZA-2210 | Install TSE 225 mm HDPE Pipe | 2027-02-10 → 2027-01-25 (-16d) | 2027-03-07 → 2027-02-17 (-18d) |  | 20d → 34d |  |
| 5 | **Testing** | 2027-03-08 → 2027-02-18 (-18d) | 2027-03-23 → 2027-03-02 (-21d) |  |  |  |
| SDR-2-CON-TS-ZA-2270 | Testing of TSE HDPE Pipe 225 mm. | 2027-03-08 → 2027-02-18 (-18d) | 2027-03-23 → 2027-03-02 (-21d) |  | 20d → 34d |  |
| 7 | **Backfilling** | 2027-03-24 → 2027-03-03 (-21d) | 2027-04-13 → 2027-03-28 (-16d) |  |  |  |
| SDR-2-CON-TS-ZA-2290 | Backfilling of TSE HDPE Pipe 225 mm. | 2027-03-24 → 2027-03-03 (-21d) | 2027-04-13 → 2027-03-28 (-16d) |  | 20d → 34d |  |
| 3 | **Valve Chambers & Valves** | 2026-12-01 → 2026-11-15 (-16d) | 2027-04-14 → 2027-04-01 (-13d) |  |  |  |
| 3 | **Excavation** | 2026-12-01 → 2026-11-15 (-16d) | 2027-01-16 → 2026-12-30 (-17d) |  |  |  |
| SDR-2-CON-TS-ZA-3230 | Excavation for Valve Chambers Section 1 | 2026-12-01 → 2026-11-15 (-16d) | 2026-12-23 → 2026-12-07 (-16d) |  | 20d → 34d |  |
| SDR-2-CON-TS-ZA-2230 | Excavation for Valve Chambers Section 2 | 2026-12-24 → 2026-12-08 (-16d) | 2027-01-16 → 2026-12-30 (-17d) |  | 20d → 34d |  |
| 1 | **bedding Works** | 2027-01-18 → 2027-01-05 (-13d) | 2027-02-10 → 2027-01-28 (-13d) |  |  |  |
| SDR-2-CON-TS-ZA-2220 | Sand bedding for Valve Chambers | 2027-01-18 → 2027-01-05 (-13d) | 2027-02-10 → 2027-01-28 (-13d) |  | 19d → 30d | SDR-2-CON-ST-ZA-6000, SDR-2-CON-ST-ZA-5930, SDR-2-CON-ST-ZA-5850, SDR-2-CON-TS-ZA-2230 → SDR-2-CON-ST-ZA-6000, SDR-2-CON-ST-ZA-5850, SDR-2-CON-TS-ZA-2230 |
| 4 | **Install Chambers & Valves** | 2027-02-11 → 2027-01-30 (-12d) | 2027-03-08 → 2027-02-23 (-13d) |  |  |  |
| SDR-2-CON-TS-ZA-2240 | Valve Chambers & Valves Installation | 2027-02-11 → 2027-01-30 (-12d) | 2027-03-08 → 2027-02-23 (-13d) |  | 19d → 30d |  |
| 5 | **Testing** | 2027-03-14 → 2027-02-24 (-18d) | 2027-03-24 → 2027-03-07 (-17d) |  |  |  |
| SDR-2-CON-TS-ZA-2250 | Testing Chambers & Valves Installation | 2027-03-14 → 2027-02-24 (-18d) | 2027-03-24 → 2027-03-07 (-17d) |  | 19d → 30d |  |
| 6 | **Backfilling** | 2027-03-25 → 2027-03-08 (-17d) | 2027-04-14 → 2027-04-01 (-13d) |  |  |  |
| SDR-2-CON-TS-ZA-2260 | Backfilling Chambers & Valves Installation | 2027-03-25 → 2027-03-08 (-17d) | 2027-04-14 → 2027-04-01 (-13d) |  | 19d → 30d |  |
| 3 | **TSE NETWORK IN ( PH2-A-MCC0 )** | 2026-12-02 → 2026-09-24 (-69d) | 2027-05-04 → 2027-04-06 (-28d) |  |  |  |
| 6 | **Pipes Work** | 2026-12-02 → 2026-09-24 (-69d) | 2027-05-04 → 2027-02-09 (-84d) |  |  |  |
| 1 | **Excavation** | 2026-12-02 → 2026-09-24 (-69d) | 2027-02-11 → 2026-11-25 (-78d) |  |  |  |
| SDR-2-CON-TS-ZA-3240 | Excavation for TSE HDPE Pipes 125 mm Section 1 | 2026-12-02 → 2026-09-24 A (-69d) | 2026-12-26 → 2026-10-21 (-66d) | 0% → 50% | 19d → 75d |  |
| SDR-2-CON-TS-ZA-1180 | Excavation for TSE HDPE Pipes 125 mm Section 2 | 2027-01-19 → 2026-11-02 (-78d) | 2027-02-11 → 2026-11-25 (-78d) |  | 2d → 69d |  |
| 3 | **bedding Works** | 2027-02-13 → 2026-11-26 (-79d) | 2027-03-14 → 2026-12-20 (-84d) |  |  |  |

| ID | Task | Start | Finish | Complete | Total float | Predecessors |
| --- | --- | --- | --- | --- | --- | --- |
| SDR-2-CON-TS-ZA-1920 | Sand bedding for TSE HDPE Pipes 125 mm | 2027-02-13 → 2026-11-26 (-79d) | 2027-03-14 → 2026-12-20 (-84d) |  | 2d → 69d |  |
| 2 | **Pipes Laying** | 2027-03-15 → 2026-12-21 (-84d) | 2027-04-07 → 2027-01-13 (-84d) |  |  |  |
| SDR-2-CON-TS-ZA-1190 | Install TSE 125 mm HDPE Pipe | 2027-03-15 → 2026-12-21 (-84d) | 2027-04-07 → 2027-01-13 (-84d) |  | 2d → 69d |  |
| 5 | **Testing** | 2027-04-08 → 2027-01-14 (-84d) | 2027-04-19 → 2027-01-25 (-84d) |  |  |  |
| SDR-2-CON-TS-ZA-1260 | Testing of TSE HDPE Pipe 125 mm. | 2027-04-08 → 2027-01-14 (-84d) | 2027-04-19 → 2027-01-25 (-84d) |  | 2d → 69d |  |
| 4 | **Backfilling** | 2027-04-20 → 2027-01-26 (-84d) | 2027-05-04 → 2027-02-09 (-84d) |  |  |  |
| SDR-2-CON-TS-ZA-1930 | Backfilling of TSE HDPE Pipe 125 mm. | 2027-04-20 → 2027-01-26 (-84d) | 2027-05-04 → 2027-02-09 (-84d) |  | 2d → 69d |  |
| 3 | **Valve Chambers & Valves** | 2026-12-02 → 2026-09-28 (-65d) | 2027-04-14 → 2027-04-06 (-8d) |  |  |  |
| 3 | **Excavation** | 2026-12-02 → 2026-09-28 (-65d) | 2027-01-16 → 2026-11-11 (-66d) |  |  |  |
| SDR-2-CON-TS-ZA-3250 | Excavation for Valve Chambers Section 1 | 2026-12-02 → 2026-09-28 (-65d) | 2026-12-26 → 2026-10-21 (-66d) |  | 19.3d → 75.3d |  |
| SDR-2-CON-TS-ZA-2010 | Excavation for Valve Chambers Section 2 | 2026-12-27 → 2026-10-22 (-66d) | 2027-01-16 → 2026-11-11 (-66d) |  | 19.3d → 75.3d |  |
| 1 | **bedding Works** | 2027-01-17 → 2026-11-12 (-66d) | 2027-02-09 → 2026-12-06 (-65d) |  |  |  |
| SDR-2-CON-TS-ZA-2000 | Sand bedding for Valve Chambers | 2027-01-17 → 2026-11-12 (-66d) | 2027-02-09 → 2026-12-06 (-65d) |  | 19.3d → 75.3d |  |
| 4 | **Install Chambers & Valves** | 2027-02-10 → 2027-02-02 (-8d) | 2027-03-07 → 2027-02-27 (-8d) |  |  |  |
| SDR-2-CON-TS-ZA-2020 | Valve Chambers & Valves Installation | 2027-02-10 → 2027-02-02 (-8d) | 2027-03-07 → 2027-02-27 (-8d) |  | 19.3d → 26.3d |  |
| 5 | **Testing** | 2027-03-08 → 2027-02-28 (-8d) | 2027-03-20 → 2027-03-07 (-13d) |  |  |  |
| SDR-2-CON-TS-ZA-2030 | Testing Chambers & Valves Installation | 2027-03-08 → 2027-02-28 (-8d) | 2027-03-20 → 2027-03-07 (-13d) |  | 19.3d → 26.3d |  |
| 6 | **Backfilling** | 2027-03-21 → 2027-03-08 (-13d) | 2027-04-14 → 2027-04-06 (-8d) |  |  |  |
| SDR-2-CON-TS-ZA-2040 | Backfilling Chambers & Valves Installation | 2027-03-21 → 2027-03-08 (-13d) | 2027-04-14 → 2027-04-06 (-8d) |  | 19.3d → 26.3d |  |
| 4 | **TSE NETWORK IN ( PH2-A-MCD0 )** | 2026-12-02 → 2026-09-07 (-86d) | 2027-04-20 → 2027-04-11 (-9d) |  |  |  |
| 6 | **Pipes Work** | 2026-12-02 → 2026-09-07 (-86d) | 2027-04-20 → 2027-04-10 (-10d) |  |  |  |
| 1 | **Excavation** | 2026-12-02 → 2026-09-07 (-86d) | 2027-01-16 → 2026-10-19 (-89d) |  |  |  |
| SDR-2-CON-TS-ZA-3260 | Excavation for TSE HDPE Pipes 90 mm Section 1 | 2026-12-02 → 2026-09-07 A (-86d) | 2026-12-24 → 2026-09-14 A (-101d) | 0% → 100% | 8d → none |  |
| SDR-2-CON-TS-ZA-1270 | Excavation for TSE HDPE Pipes 90 mm Section 2 | 2026-12-26 → 2026-09-24 A (-93d) | 2027-01-16 → 2026-10-19 (-89d) | 0% → 25% | 8d → 87d |  |
| 3 | **bedding Works** | 2027-01-17 → 2026-09-24 (-115d) | 2027-02-06 → 2026-11-09 (-89d) |  |  |  |
| SDR-2-CON-TS-ZA-1940 | Sand bedding for TSE HDPE Pipes 90 mm | 2027-01-17 → 2026-09-24 A (-115d) | 2027-02-06 → 2026-11-09 (-89d) | 0% → 25% | 19d → 95d |  |
| 2 | **Pipes Laying** | 2027-02-07 → 2026-09-24 (-136d) | 2027-03-03 → 2027-02-27 (-4d) |  |  |  |
| SDR-2-CON-TS-ZA-1280 | Install TSE 90 mm HDPE Pipe | 2027-02-07 → 2026-09-24 A (-136d) | 2027-03-03 → 2027-02-27 (-4d) | 0% → 25% | 19d → 23d |  |
| 5 | **Testing** | 2027-03-15 → 2027-02-28 (-15d) | 2027-03-27 → 2027-03-16 (-11d) |  |  |  |
| SDR-2-CON-TS-ZA-1350 | Testing of TSE HDPE Pipe 90 mm. | 2027-03-15 → 2027-02-28 (-15d) | 2027-03-27 → 2027-03-16 (-11d) |  | 14d → 23d |  |
| 4 | **Backfilling** | 2027-03-28 → 2027-03-17 (-11d) | 2027-04-20 → 2027-04-10 (-10d) |  |  |  |
| SDR-2-CON-TS-ZA-1950 | Backfilling of TSE HDPE Pipe 90 mm. | 2027-03-28 → 2027-03-17 (-11d) | 2027-04-20 → 2027-04-10 (-10d) |  | 14d → 23d |  |
| 3 | **Valve Chambers & Valves** | 2026-12-02 → 2026-09-28 (-65d) | 2027-04-13 → 2027-04-11 (-2d) |  |  |  |
| 3 | **Excavation** | 2026-12-02 → 2026-09-28 (-65d) | 2027-01-16 → 2026-11-11 (-66d) |  |  |  |
| SDR-2-CON-TS-ZA-3270 | Excavation for Valve Chambers Section 1 | 2026-12-02 → 2026-09-28 (-65d) | 2026-12-24 → 2026-10-20 (-65d) |  | 20d → 76d |  |
| SDR-2-CON-TS-ZA-2060 | Excavation for Valve Chambers Section 2 | 2026-12-26 → 2026-10-21 (-66d) | 2027-01-16 → 2026-11-11 (-66d) |  | 20d → 76d |  |
| 1 | **bedding Works** | 2027-01-17 → 2026-11-12 (-66d) | 2027-02-03 → 2026-11-30 (-65d) |  |  |  |
| SDR-2-CON-TS-ZA-2050 | Sand bedding for Valve Chambers | 2027-01-17 → 2026-11-12 (-66d) | 2027-02-03 → 2026-11-30 (-65d) |  | 20d → 76d |  |
| 4 | **Install Chambers & Valves** | 2027-02-04 → 2027-02-02 (-2d) | 2027-03-01 → 2027-02-27 (-2d) |  |  |  |
| SDR-2-CON-TS-ZA-2070 | Valve Chambers & Valves Installation | 2027-02-04 → 2027-02-02 (-2d) | 2027-03-01 → 2027-02-27 (-2d) |  | 20d → 22d |  |
| 5 | **Testing** | 2027-03-02 → 2027-02-28 (-2d) | 2027-03-22 → 2027-03-20 (-2d) |  |  |  |
| SDR-2-CON-TS-ZA-2080 | Testing Chambers & Valves Installation | 2027-03-02 → 2027-02-28 (-2d) | 2027-03-22 → 2027-03-20 (-2d) |  | 20d → 22d |  |
| 6 | **Backfilling** | 2027-03-23 → 2027-03-21 (-2d) | 2027-04-13 → 2027-04-11 (-2d) |  |  |  |
| SDR-2-CON-TS-ZA-2090 | Backfilling Chambers & Valves Installation | 2027-03-23 → 2027-03-21 (-2d) | 2027-04-13 → 2027-04-11 (-2d) |  | 20d → 22d |  |
| 5 | **TSE NETWORK IN ( PH2-A-MCE0 )** | 2026-12-13 → 2026-09-07 (-97d) | 2027-04-22 → 2027-05-05 (+13d) |  |  |  |
| 6 | **Pipes Work** | 2026-12-13 → 2026-09-07 (-97d) | 2027-04-21 → 2027-05-05 (+14d) |  |  |  |
| 1 | **Excavation** | 2026-12-13 → 2026-09-07 (-97d) | 2027-01-27 → 2027-02-17 (+21d) |  |  |  |
| SDR-2-CON-TS-ZA-3280 | Excavation for TSE HDPE Pipes 90 mm Section 1 | 2026-12-13 → 2026-09-07 A (-97d) | 2027-01-04 → 2026-09-14 A (-112d) | 0% → 100% | 12d → none |  |
| SDR-2-CON-TS-ZA-2600 | Excavation for TSE HDPE Pipes 90 mm Section 2 | 2027-01-05 → 2027-01-26 (+21d) | 2027-01-27 → 2027-02-17 (+21d) |  | 13d → 1d |  |
| 3 | **bedding Works** | 2027-01-28 → 2027-02-18 (+21d) | 2027-02-18 → 2027-03-17 (+27d) |  |  |  |
| SDR-2-CON-TS-ZA-2630 | Sand bedding for TSE HDPE Pipes 90 mm | 2027-01-28 → 2027-02-18 (+21d) | 2027-02-18 → 2027-03-17 (+27d) |  | 13d → 1d |  |
| 2 | **Pipes Laying** | 2027-02-20 → 2027-03-18 (+26d) | 2027-03-17 → 2027-04-07 (+21d) |  |  |  |
| SDR-2-CON-TS-ZA-2610 | Install TSE 90 mm HDPE Pipe | 2027-02-20 → 2027-03-18 (+26d) | 2027-03-17 → 2027-04-07 (+21d) |  | 13d → 1d |  |
| 5 | **Testing** | 2027-03-18 → 2027-04-08 (+21d) | 2027-03-29 → 2027-04-19 (+21d) |  |  |  |
| SDR-2-CON-TS-ZA-2620 | Testing of TSE HDPE Pipe 90 mm. | 2027-03-18 → 2027-04-08 (+21d) | 2027-03-29 → 2027-04-19 (+21d) |  | 13d → 1d |  |
| 4 | **Backfilling** | 2027-03-30 → 2027-04-13 (+14d) | 2027-04-21 → 2027-05-05 (+14d) |  |  |  |
| SDR-2-CON-TS-ZA-2640 | Backfilling of TSE HDPE Pipe 90 mm. | 2027-03-30 → 2027-04-13 (+14d) | 2027-04-21 → 2027-05-05 (+14d) |  | 13d → 1d | SDR-2-CON-TS-ZA-2620 → SDR-2-CON-TS-ZA-2620 SS+4d |
| 3 | **Valve Chambers & Valves** | 2026-12-13 → 2026-09-28 (-76d) | 2027-04-22 → 2027-01-31 (-81d) |  |  |  |
| 3 | **Excavation** | 2026-12-13 → 2026-09-28 (-76d) | 2027-01-27 → 2026-11-12 (-76d) |  |  |  |
| SDR-2-CON-TS-ZA-3290 | Excavation for Valve Chambers Section 1 | 2026-12-13 → 2026-09-28 (-76d) | 2027-01-05 → 2026-10-21 (-76d) |  | 12d → 77d |  |
| SDR-2-CON-TS-ZA-2660 | Excavation for Valve Chambers Section 2 | 2027-01-06 → 2026-10-22 (-76d) | 2027-01-27 → 2026-11-12 (-76d) |  | 12d → 77d |  |
| 1 | **bedding Works** | 2027-01-28 → 2026-11-14 (-75d) | 2027-02-20 → 2026-12-06 (-76d) |  |  |  |
| SDR-2-CON-TS-ZA-2650 | Sand bedding for Valve Chambers | 2027-01-28 → 2026-11-14 (-75d) | 2027-02-20 → 2026-12-06 (-76d) |  | 12d → 77d |  |
| 4 | **Install Chambers & Valves** | 2027-02-21 → 2026-12-07 (-76d) | 2027-03-22 → 2026-12-30 (-82d) |  |  |  |
| SDR-2-CON-TS-ZA-2670 | Valve Chambers & Valves Installation | 2027-02-21 → 2026-12-07 (-76d) | 2027-03-22 → 2026-12-30 (-82d) |  | 12d → 77d |  |
| 5 | **Testing** | 2027-03-23 → 2026-12-31 (-82d) | 2027-03-30 → 2027-01-07 (-82d) |  |  |  |
| SDR-2-CON-TS-ZA-2680 | Testing Chambers & Valves Installation | 2027-03-23 → 2026-12-31 (-82d) | 2027-03-30 → 2027-01-07 (-82d) |  | 12d → 77d |  |
| 6 | **Backfilling** | 2027-03-31 → 2027-01-09 (-81d) | 2027-04-22 → 2027-01-31 (-81d) |  |  |  |
| SDR-2-CON-TS-ZA-2690 | Backfilling Chambers & Valves Installation | 2027-03-31 → 2027-01-09 (-81d) | 2027-04-22 → 2027-01-31 (-81d) |  | 12d → 77d |  |
| 6 | **TSE NETWORK IN ( PH2-A-MCF0 )** | 2026-12-14 → 2026-09-28 (-77d) | 2027-04-27 → 2027-03-17 (-41d) |  |  |  |

| ID | Task | Start | Finish | Total float | Predecessors |
| --- | --- | --- | --- | --- | --- |
| 6 | **Pipes Work** | 2026-12-14 → 2026-09-28 (-77d) | 2027-04-27 → 2027-02-03 (-83d) |  |  |
| 1 | **Excavation** | 2026-12-14 → 2026-09-28 (-77d) | 2027-01-28 → 2026-11-12 (-77d) |  |  |
| SDR-2-CON-TS-ZA-3300 | Excavation for TSE HDPE Pipes 90 mm Section 1 | 2026-12-14 → 2026-09-28 (-77d) | 2027-01-05 → 2026-10-20 (-77d) | 8d → 74d |  |
| SDR-2-CON-TS-ZA-2700 | Excavation for TSE HDPE Pipes 90 mm Section 2 | 2027-01-06 → 2026-10-21 (-77d) | 2027-01-28 → 2026-11-12 (-77d) | 8d → 74d |  |
| 3 | **bedding Works** | 2027-01-30 → 2026-11-14 (-77d) | 2027-02-21 → 2026-12-06 (-77d) |  |  |
| SDR-2-CON-TS-ZA-2730 | Sand bedding for TSE HDPE Pipes 90 mm | 2027-01-30 → 2026-11-14 (-77d) | 2027-02-21 → 2026-12-06 (-77d) | 8d → 74d |  |
| 2 | **Pipes Laying** | 2027-02-23 → 2026-12-07 (-78d) | 2027-03-21 → 2026-12-28 (-83d) |  |  |
| SDR-2-CON-TS-ZA-2710 | Install TSE 90 mm HDPE Pipe | 2027-02-23 → 2026-12-07 (-78d) | 2027-03-21 → 2026-12-28 (-83d) | 8d → 74d |  |
| 5 | **Testing** | 2027-03-22 → 2026-12-29 (-83d) | 2027-04-03 → 2027-01-10 (-83d) |  |  |
| SDR-2-CON-TS-ZA-2720 | Testing of TSE HDPE Pipe 90 mm. | 2027-03-22 → 2026-12-29 (-83d) | 2027-04-03 → 2027-01-10 (-83d) | 8d → 74d |  |
| 4 | **Backfilling** | 2027-04-04 → 2027-01-11 (-83d) | 2027-04-27 → 2027-02-03 (-83d) |  |  |
| SDR-2-CON-TS-ZA-2740 | Backfilling of TSE HDPE Pipe 90 mm. | 2027-04-04 → 2027-01-11 (-83d) | 2027-04-27 → 2027-02-03 (-83d) | 8d → 74d |  |
| 3 | **Valve Chambers & Valves** | 2026-12-14 → 2026-09-28 (-77d) | 2027-04-27 → 2027-03-17 (-41d) |  |  |
| 3 | **Excavation** | 2026-12-14 → 2026-09-28 (-77d) | 2027-01-28 → 2026-12-19 (-40d) |  |  |
| SDR-2-CON-TS-ZA-3310 | Excavation for Valve Chambers Section 1 | 2026-12-14 → 2026-09-28 (-77d) | 2027-01-05 → 2026-10-20 (-77d) | 8d → 93d |  |
| SDR-2-CON-TS-ZA-2760 | Excavation for Valve Chambers Section 2 | 2027-01-06 → 2026-11-26 (-41d) | 2027-01-28 → 2026-12-19 (-40d) | 8d → 62d |  |
| 1 | **bedding Works** | 2027-01-30 → 2026-12-20 (-41d) | 2027-02-18 → 2027-01-09 (-40d) |  |  |
| SDR-2-CON-TS-ZA-2750 | Sand bedding for Valve Chambers | 2027-01-30 → 2026-12-20 (-41d) | 2027-02-18 → 2027-01-09 (-40d) | 8d → 62d |  |
| 4 | **Install Chambers & Valves** | 2027-02-20 → 2027-01-10 (-41d) | 2027-03-21 → 2027-02-02 (-47d) |  |  |
| SDR-2-CON-TS-ZA-2770 | Valve Chambers & Valves Installation | 2027-02-20 → 2027-01-10 (-41d) | 2027-03-21 → 2027-02-02 (-47d) | 8d → 62d |  |
| 5 | **Testing** | 2027-03-22 → 2027-02-03 (-47d) | 2027-04-03 → 2027-02-15 (-47d) |  |  |
| SDR-2-CON-TS-ZA-2780 | Testing Chambers & Valves Installation | 2027-03-22 → 2027-02-03 (-47d) | 2027-04-03 → 2027-02-15 (-47d) | 8d → 62d |  |
| 6 | **Backfilling** | 2027-04-04 → 2027-02-16 (-47d) | 2027-04-27 → 2027-03-17 (-41d) |  |  |
| SDR-2-CON-TS-ZA-2790 | Backfilling Chambers & Valves Installation | 2027-04-04 → 2027-02-16 (-47d) | 2027-04-27 → 2027-03-17 (-41d) | 8d → 62d | SDR-2-CON-TS-ZA-2780, SDR-2-CLO-AS-E-1010 → SDR-2-CON-TS-ZA-2780 |
| 7 | **TSE NETWORK IN ( PH2-A-MCG0 )** | 2026-11-23 → 2026-09-28 (-56d) | 2027-04-17 → 2027-02-14 (-62d) |  |  |
| 6 | **Pipes Work** | 2026-11-23 → 2026-09-28 (-56d) | 2027-04-06 → 2027-02-03 (-62d) |  |  |
| 1 | **Excavation** | 2026-11-23 → 2026-09-28 (-56d) | 2027-01-07 → 2026-11-12 (-56d) |  |  |
| SDR-2-CON-TS-ZA-3320 | Excavation for TSE HDPE Pipes 90 mm Section 1 | 2026-11-23 → 2026-09-28 (-56d) | 2026-12-15 → 2026-10-20 (-56d) | 17d → 48d |  |
| SDR-2-CON-TS-ZA-2800 | Excavation for TSE HDPE Pipes 90 mm Section 2 | 2026-12-16 → 2026-10-21 (-56d) | 2027-01-07 → 2026-11-12 (-56d) | 18d → 66d |  |
| 3 | **bedding Works** | 2027-01-09 → 2026-11-14 (-56d) | 2027-01-28 → 2026-12-03 (-56d) |  |  |
| SDR-2-CON-TS-ZA-2830 | Sand bedding for TSE HDPE Pipes 90 mm | 2027-01-09 → 2026-11-14 (-56d) | 2027-01-28 → 2026-12-03 (-56d) | 18d → 66d |  |
| 2 | **Pipes Laying** | 2027-01-30 → 2026-12-05 (-56d) | 2027-02-23 → 2026-12-28 (-57d) |  |  |
| SDR-2-CON-TS-ZA-2810 | Install TSE 90 mm HDPE Pipe | 2027-01-30 → 2026-12-05 (-56d) | 2027-02-23 → 2026-12-28 (-57d) | 18d → 66d |  |
| 5 | **Testing** | 2027-02-24 → 2026-12-29 (-57d) | 2027-03-15 → 2027-01-12 (-62d) |  |  |
| SDR-2-CON-TS-ZA-2820 | Testing of TSE HDPE Pipe 90 mm. | 2027-02-24 → 2026-12-29 (-57d) | 2027-03-15 → 2027-01-12 (-62d) | 18d → 66d |  |
| 4 | **Backfilling** | 2027-03-16 → 2027-01-13 (-62d) | 2027-04-06 → 2027-02-03 (-62d) |  |  |
| SDR-2-CON-TS-ZA-2840 | Backfilling of TSE HDPE Pipe 90 mm. | 2027-03-16 → 2027-01-13 (-62d) | 2027-04-06 → 2027-02-03 (-62d) | 18d → 66d |  |
| 3 | **Valve Chambers & Valves** | 2026-11-23 → 2026-09-28 (-56d) | 2027-04-17 → 2027-02-14 (-62d) |  |  |
| 3 | **Excavation** | 2026-11-23 → 2026-09-28 (-56d) | 2027-01-07 → 2026-11-12 (-56d) |  |  |
| SDR-2-CON-TS-ZA-3330 | Excavation for Valve Chambers Section 1 | 2026-11-23 → 2026-09-28 (-56d) | 2026-12-15 → 2026-10-20 (-56d) | 17d → 65d |  |
| SDR-2-CON-TS-ZA-2860 | Excavation for Valve Chambers Section 2 | 2026-12-16 → 2026-10-21 (-56d) | 2027-01-07 → 2026-11-12 (-56d) | 17d → 65d |  |
| 1 | **bedding Works** | 2027-01-09 → 2026-11-14 (-56d) | 2027-01-30 → 2026-12-05 (-56d) |  |  |
| SDR-2-CON-TS-ZA-2850 | Sand bedding for Valve Chambers | 2027-01-09 → 2026-11-14 (-56d) | 2027-01-30 → 2026-12-05 (-56d) | 17d → 65d | SDR-2-CON-SL-ZA-2780, SDR-2-CON-TS-ZA-2860 → SDR-2-CON-TS-ZA-2860 |
| 4 | **Install Chambers & Valves** | 2027-01-31 → 2026-12-06 (-56d) | 2027-02-24 → 2026-12-29 (-57d) |  |  |
| SDR-2-CON-TS-ZA-2870 | Valve Chambers & Valves Installation | 2027-01-31 → 2026-12-06 (-56d) | 2027-02-24 → 2026-12-29 (-57d) | 17d → 65d |  |
| 5 | **Testing** | 2027-02-25 → 2026-12-30 (-57d) | 2027-03-24 → 2027-01-21 (-62d) |  |  |
| SDR-2-CON-TS-ZA-2880 | Testing Chambers & Valves Installation | 2027-02-25 → 2026-12-30 (-57d) | 2027-03-24 → 2027-01-21 (-62d) | 17d → 65d |  |
| 6 | **Backfilling** | 2027-03-25 → 2027-01-23 (-61d) | 2027-04-17 → 2027-02-14 (-62d) |  |  |
| SDR-2-CON-TS-ZA-2890 | Backfilling Chambers & Valves Installation | 2027-03-25 → 2027-01-23 (-61d) | 2027-04-17 → 2027-02-14 (-62d) | 17d → 65d |  |
| 8 | **TSE NETWORK IN ( PH2-A-MCH0 )** | 2026-11-29 → 2026-09-28 (-62d) | 2027-04-19 → 2027-03-31 (-19d) |  |  |
| 6 | **Pipes Work** | 2026-11-29 → 2026-09-28 (-62d) | 2027-04-13 → 2027-03-25 (-19d) |  |  |
| 1 | **Excavation** | 2026-11-29 → 2026-09-28 (-62d) | 2027-01-13 → 2026-12-26 (-18d) |  |  |
| SDR-2-CON-TS-ZA-3340 | Excavation for TSE HDPE Pipes 250 mm Section 1 | 2026-11-29 → 2026-09-28 (-62d) | 2026-12-21 → 2026-10-20 (-62d) | 15d → 68d | SDR-2-CON-SL-ZA-2860, SDR-2-CON-SL-ZA-2840, SDR-2-CON-SE-ZA-1960 → SDR-2-CON-SE-ZA-1960 |
| SDR-2-CON-TS-ZA-1630 | Excavation for TSE HDPE Pipes 250 mm Section 2 | 2026-12-22 → 2026-12-03 (-19d) | 2027-01-13 → 2026-12-26 (-18d) | 15d → 31d | SDR-2-CON-MV-ZA-1220, SDR-2-CON-MV-ZA-1180, SDR-2-CON-SL-ZA-2820, SDR-2-CON-SL-ZA-2940, SDR-2-CON-TS-ZA-3340 → SDR-2-CON-TS-ZA-3340, SDR-2-CON-MV-ZA-1220, SDR-2-CON-MV-ZA-1180, SDR-2-CON-SL-ZA-2940 |
| 7 | **bedding Works** | 2027-01-14 → 2026-12-27 (-18d) | 2027-02-07 → 2027-01-19 (-19d) |  |  |
| SDR-2-CON-TS-ZA-1960 | Sand bedding for TSE HDPE Pipes 250 mm | 2027-01-14 → 2026-12-27 (-18d) | 2027-02-07 → 2027-01-19 (-19d) | 20d → 36d |  |
| 2 | **Pipes Laying** | 2027-02-08 → 2027-01-20 (-19d) | 2027-03-04 → 2027-02-13 (-19d) |  |  |
| SDR-2-CON-TS-ZA-1640 | Install TSE 250 mm HDPE Pipe | 2027-02-08 → 2027-01-20 (-19d) | 2027-03-04 → 2027-02-13 (-19d) | 20d → 36d |  |
| 5 | **Testing** | 2027-03-06 → 2027-02-14 (-20d) | 2027-03-28 → 2027-03-04 (-24d) |  |  |
| SDR-2-CON-TS-ZA-1710 | Testing of TSE HDPE Pipe 250 mm. | 2027-03-06 → 2027-02-14 (-20d) | 2027-03-28 → 2027-03-04 (-24d) | 20d → 36d |  |
| 8 | **Backfilling** | 2027-03-29 → 2027-03-06 (-23d) | 2027-04-13 → 2027-03-25 (-19d) |  |  |
| SDR-2-CON-TS-ZA-1970 | Backfilling of TSE HDPE Pipe 250 mm. | 2027-03-29 → 2027-03-06 (-23d) | 2027-04-13 → 2027-03-25 (-19d) | 20d → 36d |  |
| 3 | **Valve Chambers & Valves** | 2026-11-29 → 2026-09-28 (-62d) | 2027-04-19 → 2027-03-31 (-19d) |  |  |
| 3 | **Excavation** | 2026-11-29 → 2026-09-28 (-62d) | 2027-01-13 → 2026-12-26 (-18d) |  |  |
| SDR-2-CON-TS-ZA-3350 | Excavation for Valve Chambers Section 1 | 2026-11-29 → 2026-09-28 (-62d) | 2026-12-21 → 2026-10-20 (-62d) | 15d → 68d |  |
| SDR-2-CON-TS-ZA-2110 | Excavation for Valve Chambers Section 2 | 2026-12-22 → 2026-12-03 (-19d) | 2027-01-13 → 2026-12-26 (-18d) | 15d → 31d |  |
| 1 | **bedding Works** | 2027-01-14 → 2026-12-27 (-18d) | 2027-02-07 → 2027-01-19 (-19d) |  |  |
| SDR-2-CON-TS-ZA-2100 | Sand bedding for Valve Chambers | 2027-01-14 → 2026-12-27 (-18d) | 2027-02-07 → 2027-01-19 (-19d) | 15d → 31d |  |
| 4 | **Install Chambers & Valves** | 2027-02-08 → 2027-01-20 (-19d) | 2027-03-04 → 2027-02-13 (-19d) |  |  |
| SDR-2-CON-TS-ZA-2120 | Valve Chambers & Valves Installation | 2027-02-08 → 2027-01-20 (-19d) | 2027-03-04 → 2027-02-13 (-19d) | 15d → 31d |  |

| ID | Task | Start | Finish | Complete | Total float | Predecessors |
| --- | --- | --- | --- | --- | --- | --- |
| 5 | **Testing** | 2027-03-06 → 2027-02-14 (-20d) | 2027-03-27 → 2027-03-03 (-24d) |  |  |  |
| SDR-2-CON-TS-ZA-2130 | Testing Chambers & Valves Installation | 2027-03-06 → 2027-02-14 (-20d) | 2027-03-27 → 2027-03-03 (-24d) |  | 15d → 31d |  |
| 6 | **Backfilling** | 2027-03-28 → 2027-03-04 (-24d) | 2027-04-19 → 2027-03-31 (-19d) |  |  |  |
| SDR-2-CON-TS-ZA-2140 | Backfilling Chambers & Valves Installation | 2027-03-28 → 2027-03-04 (-24d) | 2027-04-19 → 2027-03-31 (-19d) |  | 15d → 31d |  |
| 9 | **TSE NETWORK IN ( PH2-ART-MC00 )** | 2026-11-25 → 2026-09-07 (-79d) | 2027-04-15 → 2027-03-07 (-39d) |  |  |  |
| 6 | **Pipes Work** | 2026-11-25 → 2026-09-07 (-79d) | 2027-04-15 → 2027-02-10 (-64d) |  |  |  |
| 1 | **Excavation** | 2026-11-25 → 2026-09-07 (-79d) | 2027-01-10 → 2026-11-12 (-59d) |  |  |  |
| SDR-2-CON-TS-ZA-3360 | Excavation for TSE HDPE Pipes 450 mm Section 1 | 2026-11-25 → 2026-09-07 A (-79d) | 2026-12-17 → 2026-09-14 A (-94d) | 0% → 100% | 18d → none | SDR-2-CON-TS-ZA-3200 SS+5d → SDR-2-CON-TS-ZA-3320 |
| SDR-2-CON-TS-ZA-1720 | Excavation for TSE HDPE Pipes 450 mm Section 2 | 2026-12-19 → 2026-10-21 (-59d) | 2027-01-10 → 2026-11-12 (-59d) |  | 18d → 68d |  |
| 7 | **bedding Works** | 2027-01-11 → 2026-11-14 (-58d) | 2027-02-03 → 2026-12-07 (-58d) |  |  |  |
| SDR-2-CON-TS-ZA-1980 | Sand bedding for TSE HDPE Pipes 450 mm | 2027-01-11 → 2026-11-14 (-58d) | 2027-02-03 → 2026-12-07 (-58d) |  | 18d → 68d |  |
| 2 | **Pipes Laying** | 2027-02-04 → 2026-12-08 (-58d) | 2027-03-01 → 2026-12-31 (-60d) |  |  |  |
| SDR-2-CON-TS-ZA-1730 | Install TSE 450 mm HDPE Pipe | 2027-02-04 → 2026-12-08 (-58d) | 2027-03-01 → 2026-12-31 (-60d) |  | 18d → 68d |  |
| 5 | **Testing** | 2027-03-02 → 2027-01-02 (-59d) | 2027-03-23 → 2027-01-18 (-64d) |  |  |  |
| SDR-2-CON-TS-ZA-1800 | Testing of TSE HDPE Pipe 450 mm. | 2027-03-02 → 2027-01-02 (-59d) | 2027-03-23 → 2027-01-18 (-64d) |  | 18d → 68d |  |
| 8 | **Backfilling** | 2027-03-24 → 2027-01-19 (-64d) | 2027-04-15 → 2027-02-10 (-64d) |  |  |  |
| SDR-2-CON-TS-ZA-1990 | Backfilling of TSE HDPE Pipe 450 mm. | 2027-03-24 → 2027-01-19 (-64d) | 2027-04-15 → 2027-02-10 (-64d) |  | 18d → 68d |  |
| 3 | **Valve Chambers & Valves** | 2026-11-25 → 2026-10-21 (-35d) | 2027-04-15 → 2027-03-07 (-39d) |  |  |  |
| 3 | **Excavation** | 2026-11-25 → 2026-10-21 (-35d) | 2027-01-10 → 2026-12-06 (-35d) |  |  |  |
| SDR-2-CON-TS-ZA-3370 | Excavation for Valve Chambers Section 1 | 2026-11-25 → 2026-10-21 (-35d) | 2026-12-17 → 2026-11-12 (-35d) |  | 18d → 48d |  |
| SDR-2-CON-TS-ZA-2160 | Excavation for Valve Chambers Section 2 | 2026-12-19 → 2026-11-14 (-35d) | 2027-01-10 → 2026-12-06 (-35d) |  | 18d → 48d |  |
| 1 | **bedding Works** | 2027-01-11 → 2026-12-07 (-35d) | 2027-02-03 → 2026-12-30 (-35d) |  |  |  |
| SDR-2-CON-TS-ZA-2150 | Sand bedding for Valve Chambers | 2027-01-11 → 2026-12-07 (-35d) | 2027-02-03 → 2026-12-30 (-35d) |  | 18d → 48d |  |
| 4 | **Install Chambers & Valves** | 2027-02-04 → 2026-12-31 (-35d) | 2027-03-01 → 2027-01-24 (-36d) |  |  |  |
| SDR-2-CON-TS-ZA-2170 | Valve Chambers & Valves Installation | 2027-02-04 → 2026-12-31 (-35d) | 2027-03-01 → 2027-01-24 (-36d) |  | 18d → 48d |  |
| 5 | **Testing** | 2027-03-02 → 2027-01-25 (-36d) | 2027-03-23 → 2027-02-10 (-41d) |  |  |  |
| SDR-2-CON-TS-ZA-2180 | Testing Chambers & Valves Installation | 2027-03-02 → 2027-01-25 (-36d) | 2027-03-23 → 2027-02-10 (-41d) |  | 18d → 48d | SDR-2-CLO-AS-E-1010, SDR-2-CON-TS-ZA-2170 → SDR-2-CON-TS-ZA-2170 |
| 6 | **Backfilling** | 2027-03-24 → 2027-02-11 (-41d) | 2027-04-15 → 2027-03-07 (-39d) |  |  |  |
| SDR-2-CON-TS-ZA-2190 | Backfilling Chambers & Valves Installation | 2027-03-24 → 2027-02-11 (-41d) | 2027-04-15 → 2027-03-07 (-39d) |  | 18d → 48d |  |
| 10 | **TSE NETWORK IN ( PH2-ART-MC10 )** | 2026-12-02 → 2026-08-06 (-118d) | 2027-04-18 → 2027-02-24 (-53d) |  |  |  |
| 6 | **Pipes Work** | 2026-12-02 → 2026-08-06 (-118d) | 2027-04-13 → 2026-11-30 (-134d) |  |  |  |
| 1 | **Excavation** | 2026-12-02 → 2026-08-06 (-118d) | 2027-01-18 → 2026-11-30 (-49d) |  |  |  |
| SDR-2-CON-TS-ZA-3380 | Excavation for TSE HDPE Pipes 450 mm Section 1 | 2026-12-02 → 2026-08-06 A (-118d) | 2026-12-24 → 2026-09-03 A (-112d) | 0% → 100% | 21d → none | SDR-2-CON-SE-ZA-1560 → SDR-2-CON-TS-ZA-3360 |
| SDR-2-CON-TS-ZA-3100 | Excavation for TSE HDPE Pipes 450 mm Section 2 | 2026-12-28 → 2026-08-25 A (-125d) | 2027-01-18 → 2026-11-30 (-49d) | 0% → 50% | 20d → 130d | SDR-2-CON-SL-ZA-3170, SDR-2-CON-TS-ZA-3380 → SDR-2-CON-TS-ZA-3380, SDR-2-CON-SL-ZA-3170 FF |
| 7 | **bedding Works** | 2027-01-19 → 2026-08-13 (-159d) | 2027-02-04 → 2026-11-30 (-66d) |  |  |  |
| SDR-2-CON-TS-ZA-3130 | Sand bedding for TSE HDPE Pipes 450 mm | 2027-01-19 → 2026-08-13 A (-159d) | 2027-02-04 → 2026-11-30 (-66d) | 0% → 50% | 20d → 130d | SDR-2-CON-TS-ZA-3100 → SDR-2-CON-TS-ZA-3100 FF |
| 2 | **Pipes Laying** | 2027-02-06 → 2026-08-17 (-173d) | 2027-03-02 → 2026-11-30 (-92d) |  |  |  |
| SDR-2-CON-TS-ZA-3110 | Install TSE 450 mm HDPE Pipe | 2027-02-06 → 2026-08-17 A (-173d) | 2027-03-02 → 2026-11-30 (-92d) | 0% → 50% | 20d → 130d | SDR-2-CON-TS-ZA-3100, SDR-2-CON-TS-ZA-3130 → SDR-2-CON-TS-ZA-3100 FF, SDR-2-CON-TS-ZA-3130 FF |
| 5 | **Testing** | 2027-03-03 → 2026-08-25 (-190d) | 2027-03-22 → 2026-11-30 (-112d) |  |  |  |
| SDR-2-CON-TS-ZA-3120 | Testing of TSE HDPE Pipe 450 mm. | 2027-03-03 → 2026-08-25 A (-190d) | 2027-03-22 → 2026-11-30 (-112d) | 0% → 50% | 20d → 130d | SDR-2-CLO-AS-E-1010, SDR-2-CON-TS-ZA-3110 → SDR-2-CON-TS-ZA-3110 FF |
| 8 | **Backfilling** | 2027-03-23 → 2026-08-31 (-204d) | 2027-04-13 → 2026-11-30 (-134d) |  |  |  |
| SDR-2-CON-TS-ZA-3140 | Backfilling of TSE HDPE Pipe 450 mm. | 2027-03-23 → 2026-08-31 A (-204d) | 2027-04-13 → 2026-11-30 (-134d) | 0% → 50% | 20d → 130d | SDR-2-CON-TS-ZA-3120 → SDR-2-CON-TS-ZA-3120 FF |
| 3 | **Valve Chambers & Valves** | 2026-12-02 → 2026-10-21 (-42d) | 2027-04-18 → 2027-02-24 (-53d) |  |  |  |
| 3 | **Excavation** | 2026-12-02 → 2026-10-21 (-42d) | 2027-01-21 → 2026-12-05 (-47d) |  |  |  |
| SDR-2-CON-TS-ZA-3390 | Excavation for Valve Chambers Section 1 | 2026-12-02 → 2026-10-21 (-42d) | 2026-12-24 → 2026-11-12 (-42d) |  | 21d → 57d |  |
| SDR-2-CON-TS-ZA-3160 | Excavation for Valve Chambers Section 2 | 2026-12-31 → 2026-11-14 (-47d) | 2027-01-21 → 2026-12-05 (-47d) |  | 16d → 57d |  |
| 1 | **bedding Works** | 2027-01-23 → 2026-12-06 (-48d) | 2027-02-11 → 2026-12-26 (-47d) |  |  |  |
| SDR-2-CON-TS-ZA-3150 | Sand bedding for Valve Chambers | 2027-01-23 → 2026-12-06 (-48d) | 2027-02-11 → 2026-12-26 (-47d) |  | 16d → 57d |  |
| 4 | **Install Chambers & Valves** | 2027-02-13 → 2026-12-27 (-48d) | 2027-03-14 → 2027-01-19 (-54d) |  |  |  |
| SDR-2-CON-TS-ZA-3170 | Valve Chambers & Valves Installation | 2027-02-13 → 2026-12-27 (-48d) | 2027-03-14 → 2027-01-19 (-54d) |  | 16d → 57d |  |
| 5 | **Testing** | 2027-03-15 → 2027-01-20 (-54d) | 2027-03-25 → 2027-01-31 (-53d) |  |  |  |
| SDR-2-CON-TS-ZA-3180 | Testing Chambers & Valves Installation | 2027-03-15 → 2027-01-20 (-54d) | 2027-03-25 → 2027-01-31 (-53d) |  | 16d → 57d |  |
| 6 | **Backfilling** | 2027-03-27 → 2027-02-01 (-54d) | 2027-04-18 → 2027-02-24 (-53d) |  |  |  |
| SDR-2-CON-TS-ZA-3190 | Backfilling Chambers & Valves Installation | 2027-03-27 → 2027-02-01 (-54d) | 2027-04-18 → 2027-02-24 (-53d) |  | 16d → 57d |  |
| ZG | **ZONE G** | 2026-11-16 → 2026-08-12 (-96d) | 2027-05-24 → 2027-05-05 (-19d) |  |  |  |
| 1 | **TSE NETWORK IN ( PH2-G-MCA0 )** | 2026-11-30 → 2026-08-12 (-110d) | 2027-04-20 → 2027-02-09 (-70d) |  |  |  |
| 6 | **Pipes Work** | 2026-11-30 → 2026-08-12 (-110d) | 2027-04-20 → 2026-11-05 (-166d) |  |  |  |
| 1 | **Excavation** | 2026-11-30 → 2026-08-12 (-110d) | 2027-01-17 → 2026-09-28 (-111d) |  |  |  |
| SDR-2-CON-TS-ZA-2300 | Excavation for TSE HDPE Pipes 225 mm Section 2 | 2026-12-24 → 2026-08-12 A (-134d) | 2027-01-17 → 2026-09-28 (-111d) | 0% → 30% | 3d → 89d | SDR-2-CON-TS-ZA-3400 → SDR-2-CON-TS-ZA-3400 FF |
| SDR-2-CON-TS-ZA-3400 | Excavation for TSE HDPE Pipes 225 mm Section 1 | 2026-11-30 → 2026-08-12 A (-110d) | 2026-12-23 → 2026-09-28 (-86d) | 0% → 30% | 3d → 69d |  |
| 6 | **bedding Works** | 2027-01-18 → 2026-08-24 (-147d) | 2027-02-10 → 2026-09-28 (-135d) |  |  |  |
| SDR-2-CON-TS-ZA-2380 | Sand bedding for TSE HDPE Pipes 225 mm | 2027-01-18 → 2026-08-24 A (-147d) | 2027-02-10 → 2026-09-28 (-135d) | 0% → 20% | 14d → 151d | SDR-2-CON-TS-ZA-2300 → SDR-2-CON-TS-ZA-2300 FF |
| 2 | **Pipes Laying** | 2027-02-11 → 2026-08-25 (-170d) | 2027-03-08 → 2026-09-28 (-161d) |  |  |  |
| SDR-2-CON-TS-ZA-2310 | Install TSE 225 mm HDPE Pipe | 2027-02-11 → 2026-08-25 A (-170d) | 2027-03-08 → 2026-09-28 (-161d) | 0% → 20% | 14d → 151d | SDR-2-CON-TS-ZA-2300, SDR-2-CON-TS-ZA-2380 → SDR-2-CON-TS-ZA-2300 FF, SDR-2-CON-TS-ZA-2380 FF |
| 5 | **Testing** | 2027-03-14 → 2026-09-29 (-166d) | 2027-03-28 → 2026-10-13 (-166d) |  |  |  |
| SDR-2-CON-TS-ZA-2370 | Testing of TSE HDPE Pipe 225 mm. | 2027-03-14 → 2026-09-29 (-166d) | 2027-03-28 → 2026-10-13 (-166d) |  | 14d → 151d |  |
| 7 | **Backfilling** | 2027-03-29 → 2026-10-14 (-166d) | 2027-04-20 → 2026-11-05 (-166d) |  |  |  |
| SDR-2-CON-TS-ZA-2390 | Backfilling of TSE HDPE Pipe 225 mm. | 2027-03-29 → 2026-10-14 (-166d) | 2027-04-20 → 2026-11-05 (-166d) |  | 14d → 151d |  |
| 3 | **Valve Chambers & Valves** | 2026-11-30 → 2026-09-28 (-63d) | 2027-04-19 → 2027-02-09 (-69d) |  |  |  |
| 3 | **Excavation** | 2026-11-30 → 2026-09-28 (-63d) | 2027-01-14 → 2026-11-12 (-63d) |  |  |  |

| ID | Task | Start | Finish | Complete | Total float | Predecessors |
| --- | --- | --- | --- | --- | --- | --- |
| SDR-2-CON-TS-ZA-3410 | Excavation for Valve Chambers Section 1 | 2026-11-30 → 2026-09-28 (-63d) | 2026-12-22 → 2026-10-20 (-63d) |  | 15d → 69d |  |
| SDR-2-CON-TS-ZA-2330 | Excavation for Valve Chambers Section 2 | 2026-12-23 → 2026-10-21 (-63d) | 2027-01-14 → 2026-11-12 (-63d) |  | 15d → 69d |  |
| 1 | **bedding Works** | 2027-01-16 → 2026-11-14 (-63d) | 2027-02-08 → 2026-12-07 (-63d) |  |  |  |
| SDR-2-CON-TS-ZA-2320 | Sand bedding for Valve Chambers | 2027-01-16 → 2026-11-14 (-63d) | 2027-02-08 → 2026-12-07 (-63d) |  | 15d → 69d |  |
| 4 | **Install Chambers & Valves** | 2027-02-09 → 2026-12-08 (-63d) | 2027-03-06 → 2026-12-31 (-65d) |  |  |  |
| SDR-2-CON-TS-ZA-2340 | Valve Chambers & Valves Installation | 2027-02-09 → 2026-12-08 (-63d) | 2027-03-06 → 2026-12-31 (-65d) |  | 15d → 69d |  |
| 5 | **Testing** | 2027-03-07 → 2027-01-02 (-64d) | 2027-03-25 → 2027-01-16 (-68d) |  |  |  |
| SDR-2-CON-TS-ZA-2350 | Testing Chambers & Valves Installation | 2027-03-07 → 2027-01-02 (-64d) | 2027-03-25 → 2027-01-16 (-68d) |  | 15d → 69d |  |
| 6 | **Backfilling** | 2027-03-28 → 2027-01-18 (-69d) | 2027-04-19 → 2027-02-09 (-69d) |  |  |  |
| SDR-2-CON-TS-ZA-2360 | Backfilling Chambers & Valves Installation | 2027-03-28 → 2027-01-18 (-69d) | 2027-04-19 → 2027-02-09 (-69d) |  | 15d → 69d |  |
| 2 | **TSE NETWORK IN ( PH2-G-MCE0 )** | 2026-12-02 → 2026-08-12 (-112d) | 2027-04-20 → 2027-04-12 (-8d) |  |  |  |
| 6 | **Pipes Work** | 2026-12-02 → 2026-08-12 (-112d) | 2027-04-19 → 2026-12-22 (-118d) |  |  |  |
| 1 | **Excavation** | 2026-12-02 → 2026-08-12 (-112d) | 2027-01-18 → 2026-09-28 (-112d) |  |  |  |
| SDR-2-CON-TS-ZA-2400 | Excavation for TSE HDPE Pipes 125 mm Section 2 | 2026-12-27 → 2026-08-12 A (-137d) | 2027-01-18 → 2026-09-28 (-112d) | 0% → 30% | 3d → 98d | SDR-2-CON-TS-ZA-3420 → SDR-2-CON-TS-ZA-3420 FF |
| SDR-2-CON-TS-ZA-3420 | Excavation for TSE HDPE Pipes 125 mm Section 1 | 2026-12-02 → 2026-08-12 A (-112d) | 2026-12-26 → 2026-09-28 (-89d) | 0% → 30% | 3d → 98d |  |
| 3 | **bedding Works** | 2027-01-19 → 2026-09-29 (-112d) | 2027-02-11 → 2026-10-22 (-112d) |  |  |  |
| SDR-2-CON-TS-ZA-2430 | Sand bedding for TSE HDPE Pipes 125 mm | 2027-01-19 → 2026-09-29 (-112d) | 2027-02-11 → 2026-10-22 (-112d) |  | 15d → 111d |  |
| 2 | **Pipes Laying** | 2027-02-13 → 2026-10-24 (-112d) | 2027-03-14 → 2026-11-16 (-118d) |  |  |  |
| SDR-2-CON-TS-ZA-2410 | Install TSE 125 mm HDPE Pipe | 2027-02-13 → 2026-10-24 (-112d) | 2027-03-14 → 2026-11-16 (-118d) |  | 15d → 111d |  |
| 5 | **Testing** | 2027-03-15 → 2026-11-17 (-118d) | 2027-03-25 → 2026-11-28 (-117d) |  |  |  |
| SDR-2-CON-TS-ZA-2420 | Testing of TSE HDPE Pipe 125 mm. | 2027-03-15 → 2026-11-17 (-118d) | 2027-03-25 → 2026-11-28 (-117d) |  | 15d → 111d |  |
| 4 | **Backfilling** | 2027-03-27 → 2026-11-29 (-118d) | 2027-04-19 → 2026-12-22 (-118d) |  |  |  |
| SDR-2-CON-TS-ZA-2440 | Backfilling of TSE HDPE Pipe 125 mm. | 2027-03-27 → 2026-11-29 (-118d) | 2027-04-19 → 2026-12-22 (-118d) |  | 15d → 111d |  |
| 3 | **Valve Chambers & Valves** | 2026-12-02 → 2026-09-29 (-64d) | 2027-04-20 → 2027-04-12 (-8d) |  |  |  |
| 3 | **Excavation** | 2026-12-02 → 2026-09-29 (-64d) | 2027-01-19 → 2026-11-16 (-64d) |  |  |  |
| SDR-2-CON-TS-ZA-3430 | Excavation for Valve Chambers Section 1 | 2026-12-02 → 2026-09-29 (-64d) | 2026-12-26 → 2026-10-22 (-65d) |  | 14d → 69d | SDR-2-CON-TS-ZA-3420 SS → SDR-2-CON-TS-ZA-3400 |
| SDR-2-CON-TS-ZA-2460 | Excavation for Valve Chambers Section 2 | 2026-12-27 → 2026-10-24 (-64d) | 2027-01-19 → 2026-11-16 (-64d) |  | 14d → 69d | SDR-2-CON-ST-ZA-4430, SDR-2-CON-TS-ZA-3430 → SDR-2-CON-TS-ZA-3430 |
| 1 | **bedding Works** | 2027-01-20 → 2026-11-17 (-64d) | 2027-02-13 → 2026-12-10 (-65d) |  |  |  |
| SDR-2-CON-TS-ZA-2450 | Sand bedding for Valve Chambers | 2027-01-20 → 2026-11-17 (-64d) | 2027-02-13 → 2026-12-10 (-65d) |  | 14d → 69d |  |
| 4 | **Install Chambers & Valves** | 2027-02-14 → 2027-02-06 (-8d) | 2027-03-15 → 2027-03-02 (-13d) |  |  |  |
| SDR-2-CON-TS-ZA-2470 | Valve Chambers & Valves Installation | 2027-02-14 → 2027-02-06 (-8d) | 2027-03-15 → 2027-03-02 (-13d) |  | 14d → 21d |  |
| 5 | **Testing** | 2027-03-16 → 2027-03-03 (-13d) | 2027-03-25 → 2027-03-17 (-8d) |  |  |  |
| SDR-2-CON-TS-ZA-2480 | Testing Chambers & Valves Installation | 2027-03-16 → 2027-03-03 (-13d) | 2027-03-25 → 2027-03-17 (-8d) |  | 14d → 21d |  |
| 6 | **Backfilling** | 2027-03-28 → 2027-03-20 (-8d) | 2027-04-20 → 2027-04-12 (-8d) |  |  |  |
| SDR-2-CON-TS-ZA-2490 | Backfilling Chambers & Valves Installation | 2027-03-28 → 2027-03-20 (-8d) | 2027-04-20 → 2027-04-12 (-8d) |  | 14d → 21d |  |
| 3 | **TSE NETWORK IN ( PH2-G-MCF0 )** | 2026-11-16 → 2026-08-13 (-95d) |  |  |  |  |
| 6 | **Pipes Work** | 2026-11-16 → 2026-08-13 (-95d) | 2027-04-14 → 2027-03-30 (-15d) |  |  |  |
| 1 | **Excavation** | 2026-11-16 → 2026-08-13 (-95d) | 2027-01-02 → 2026-11-30 (-33d) |  |  |  |
| SDR-2-CON-TS-ZA-2900 | Excavation for TSE HDPE Pipes 90 mm Section 2 | 2026-12-10 → 2026-08-13 A (-119d) | 2027-01-02 → 2026-11-30 (-33d) | 0% → 30% | 13d → 26d | SDR-2-CON-SL-ZA-2820, SDR-2-CON-SL-ZA-2970, SDR-2-CON-TS-ZA-3440 → SDR-2-CON-TS-ZA-3440 FF, SDR-2-CON-SL-ZA-2970 FF |
| SDR-2-CON-TS-ZA-3440 | Excavation for TSE HDPE Pipes 90 mm Section 1 | 2026-11-16 → 2026-08-13 A (-95d) | 2026-12-09 → 2026-10-31 (-39d) | 0% → 30% | 13d → 37d | SDR-2-PRO-ST-E-1200 FS+5d, SDR-2-CON-SE-ZA-2260 → SDR-2-CON-SE-ZA-2260, SDR-2-PRO-ST-E-1200 FF |
| 3 | **bedding Works** | 2027-01-03 → 2026-12-13 (-21d) | 2027-01-26 → 2027-01-05 (-21d) |  |  |  |
| SDR-2-CON-TS-ZA-2930 | Sand bedding for TSE HDPE Pipes 90 mm | 2027-01-03 → 2026-12-13 (-21d) | 2027-01-26 → 2027-01-05 (-21d) |  | 19d → 37d | SDR-2-CON-ST-ZA-4430, SDR-2-CON-RW-ZG-2110, SDR-2-CON-SL-ZA-3130, SDR-2-CON-TS-ZA-2900 → SDR-2-CON-ST-ZA-4430 SS, SDR-2-CON-RW-ZG-2110, SDR-2-CON-SL-ZA-3130, SDR-2-CON-TS-ZA-2900 |
| 2 | **Pipes Laying** | 2027-01-27 → 2027-01-06 (-21d) | 2027-02-20 → 2027-01-30 (-21d) |  |  |  |
| SDR-2-CON-TS-ZA-2910 | Install TSE 90 mm HDPE Pipe | 2027-01-27 → 2027-01-06 (-21d) | 2027-02-20 → 2027-01-30 (-21d) |  | 19d → 37d |  |
| 5 | **Testing** | 2027-02-21 → 2027-02-06 (-15d) | 2027-03-21 → 2027-03-01 (-20d) |  |  |  |
| SDR-2-CON-TS-ZA-2920 | Testing of TSE HDPE Pipe 90 mm. | 2027-02-21 → 2027-02-06 (-15d) | 2027-03-21 → 2027-03-01 (-20d) |  | 19d → 32d |  |
| 4 | **Backfilling** | 2027-03-22 → 2027-03-02 (-20d) | 2027-04-14 → 2027-03-30 (-15d) |  |  |  |
| SDR-2-CON-TS-ZA-2940 | Backfilling of TSE HDPE Pipe 90 mm. | 2027-03-22 → 2027-03-02 (-20d) | 2027-04-14 → 2027-03-30 (-15d) |  | 19d → 32d |  |
| 3 | **Valve Chambers & Valves** | 2026-11-16 → 2026-10-29 (-18d) | 2027-04-12 → 2027-04-14 (+2d) |  |  |  |
| 3 | **Excavation** | 2026-11-16 → 2026-10-29 (-18d) | 2026-12-31 → 2026-12-14 (-17d) |  |  |  |
| SDR-2-CON-TS-ZA-3450 | Excavation for Valve Chambers Section 1 | 2026-11-16 → 2026-10-29 (-18d) | 2026-12-08 → 2026-11-21 (-17d) |  | 22d → 37d |  |
| SDR-2-CON-TS-ZA-2960 | Excavation for Valve Chambers Section 2 | 2026-12-09 → 2026-11-22 (-17d) | 2026-12-31 → 2026-12-14 (-17d) |  | 22d → 37d |  |
| 1 | **bedding Works** | 2027-01-02 → 2027-01-05 (+3d) | 2027-01-21 → 2027-01-25 (+4d) |  |  |  |
| SDR-2-CON-TS-ZA-2950 | Sand bedding for Valve Chambers | 2027-01-02 → 2027-01-05 (+3d) | 2027-01-21 → 2027-01-25 (+4d) |  | 22d → 19d |  |
| 4 | **Install Chambers & Valves** | 2027-01-24 → 2027-01-26 (+2d) | 2027-02-16 → 2027-02-18 (+2d) |  |  |  |
| SDR-2-CON-TS-ZA-2970 | Valve Chambers & Valves Installation | 2027-01-24 → 2027-01-26 (+2d) | 2027-02-16 → 2027-02-18 (+2d) |  | 21d → 19d |  |
| 5 | **Testing** | 2027-02-17 → 2027-02-20 (+3d) | 2027-03-17 → 2027-03-20 (+3d) |  |  |  |
| SDR-2-CON-TS-ZA-2980 | Testing Chambers & Valves Installation | 2027-02-17 → 2027-02-20 (+3d) | 2027-03-17 → 2027-03-20 (+3d) |  | 21d → 19d |  |
| 6 | **Backfilling** | 2027-03-20 → 2027-03-22 (+2d) | 2027-04-12 → 2027-04-14 (+2d) |  |  |  |
| SDR-2-CON-TS-ZA-2990 | Backfilling Chambers & Valves Installation | 2027-03-20 → 2027-03-22 (+2d) | 2027-04-12 → 2027-04-14 (+2d) |  | 21d → 19d |  |
| 4 | **TSE NETWORK IN ( PH2-G-MCG0 )** | 2026-11-30 → 2026-08-13 (-109d) | 2027-04-28 → 2027-05-04 (+6d) |  |  |  |
| 6 | **Pipes Work** | 2026-11-30 → 2026-08-13 (-109d) | 2027-04-19 → 2027-01-10 (-99d) |  |  |  |
| 1 | **Excavation** | 2026-11-30 → 2026-08-13 (-109d) | 2027-01-14 → 2026-09-28 (-108d) |  |  |  |
| SDR-2-CON-TS-ZA-3000 | Excavation for TSE HDPE Pipes 90 mm Section 2 | 2026-12-23 → 2026-08-13 A (-132d) | 2027-01-14 → 2026-09-28 (-108d) | 0% → 40% | 9d → 86d | SDR-2-CON-TS-ZA-3460 → SDR-2-CON-TS-ZA-3460 FF |
| SDR-2-CON-TS-ZA-3460 | Excavation for TSE HDPE Pipes 90 mm Section 1 | 2026-11-30 → 2026-08-13 A (-109d) | 2026-12-22 → 2026-09-27 A (-86d) | 0% → 100% | 8d → none |  |
| 3 | **bedding Works** | 2027-01-16 → 2026-09-29 (-109d) | 2027-02-08 → 2026-10-22 (-109d) |  |  |  |
| SDR-2-CON-TS-ZA-3030 | Sand bedding for TSE HDPE Pipes 90 mm | 2027-01-16 → 2026-09-29 (-109d) | 2027-02-08 → 2026-10-22 (-109d) |  | 15d → 108d |  |
| 2 | **Pipes Laying** | 2027-02-09 → 2026-10-24 (-108d) | 2027-03-06 → 2026-11-16 (-110d) |  |  |  |
| SDR-2-CON-TS-ZA-3010 | Install TSE 90 mm HDPE Pipe | 2027-02-09 → 2026-10-24 (-108d) | 2027-03-06 → 2026-11-16 (-110d) |  | 15d → 108d |  |
| 5 | **Testing** | 2027-03-07 → 2026-11-17 (-110d) | 2027-03-25 → 2026-12-01 (-114d) |  |  |  |

| ID | Task | Start | Finish | Complete | Total float | Predecessors |
| --- | --- | --- | --- | --- | --- | --- |
| SDR-2-CON-TS-ZA-3020 | Testing of TSE HDPE Pipe 90 mm. | 2027-03-07 → 2026-11-17 (-110d) | 2027-03-25 → 2026-12-01 (-114d) |  | 15d → 108d |  |
| 4 | **Backfilling** | 2027-03-27 → 2026-12-17 (-100d) | 2027-04-19 → 2027-01-10 (-99d) |  |  |  |
| SDR-2-CON-TS-ZA-3040 | Backfilling of TSE HDPE Pipe 90 mm. | 2027-03-27 → 2026-12-17 (-100d) | 2027-04-19 → 2027-01-10 (-99d) |  | 15d → 95d |  |
| 3 | **Valve Chambers & Valves** | 2026-11-30 → 2026-09-28 (-63d) | 2027-04-28 → 2027-05-04 (+6d) |  |  |  |
| 3 | **Excavation** | 2026-11-30 → 2026-09-28 (-63d) | 2027-01-14 → 2026-11-12 (-63d) |  |  |  |
| SDR-2-CON-TS-ZA-3470 | Excavation for Valve Chambers Section 1 | 2026-11-30 → 2026-09-28 (-63d) | 2026-12-22 → 2026-10-20 (-63d) |  | 8d → 68d |  |
| SDR-2-CON-TS-ZA-3060 | Excavation for Valve Chambers Section 2 | 2026-12-23 → 2026-10-21 (-63d) | 2027-01-14 → 2026-11-12 (-63d) |  | 8d → 68d |  |
| 1 | **bedding Works** | 2027-01-16 → 2027-01-05 (-11d) | 2027-02-08 → 2027-01-28 (-11d) |  |  |  |
| SDR-2-CON-TS-ZA-3050 | Sand bedding for Valve Chambers | 2027-01-16 → 2027-01-05 (-11d) | 2027-02-08 → 2027-01-28 (-11d) |  | 8d → 23d |  |
| 4 | **Install Chambers & Valves** | 2027-02-09 → 2027-02-24 (+15d) | 2027-03-06 → 2027-03-24 (+18d) |  |  |  |
| SDR-2-CON-TS-ZA-3070 | Valve Chambers & Valves Installation | 2027-02-09 → 2027-02-24 (+15d) | 2027-03-06 → 2027-03-24 (+18d) |  | 8d → 2d |  |
| 5 | **Testing** | 2027-03-08 → 2027-03-18 (+10d) | 2027-04-03 → 2027-04-08 (+5d) |  |  |  |
| SDR-2-CON-TS-ZA-3080 | Testing Chambers & Valves Installation | 2027-03-08 → 2027-03-18 (+10d) | 2027-04-03 → 2027-04-08 (+5d) |  | 7d → 2d | SDR-2-CON-SE-ZA-2030, SDR-2-CON-ST-ZA-5480, SDR-2-CON-TS-ZA-3070 → SDR-2-CON-SE-ZA-2030, SDR-2-CON-ST-ZA-5480, SDR-2-CON-TS-ZA-3070 SS+15d |
| 6 | **Backfilling** | 2027-04-05 → 2027-04-11 (+6d) | 2027-04-28 → 2027-05-04 (+6d) |  |  |  |
| SDR-2-CON-TS-ZA-3090 | Backfilling Chambers & Valves Installation | 2027-04-05 → 2027-04-11 (+6d) | 2027-04-28 → 2027-05-04 (+6d) |  | 7d → 2d |  |
| 5 | **TSE NETWORK IN ( PH2-G-MCZ0 )** | 2026-11-30 → 2026-08-13 (-109d) | 2027-05-24 → 2027-05-05 (-19d) |  |  |  |
| 6 | **Pipes Work** | 2026-11-30 → 2026-08-13 (-109d) | 2027-05-24 → 2027-05-05 (-19d) |  |  |  |
| 1 | **Excavation** | 2026-11-30 → 2026-08-13 (-109d) | 2027-01-16 → 2026-09-28 (-110d) |  |  |  |
| SDR-2-CON-TS-ZA-2500 | Excavation for TSE HDPE Pipes 125 mm Section 2 | 2026-12-24 → 2026-08-13 A (-133d) | 2027-01-16 → 2026-09-28 (-110d) | 0% → 40% | 0d → 85d | SDR-2-CON-RW-ZG-2540, SDR-2-CON-TS-ZA-3480 → SDR-2-CON-RW-ZG-2540, SDR-2-CON-TS-ZA-3480 FF |
| SDR-2-CON-TS-ZA-3480 | Excavation for TSE HDPE Pipes 125 mm Section 1 | 2026-11-30 → 2026-08-13 A (-109d) | 2026-12-23 → 2026-09-28 (-86d) | 0% → 40% | 0d → 69d |  |
| 3 | **bedding Works** | 2027-01-17 → 2027-01-12 (-5d) | 2027-02-09 → 2027-02-04 (-5d) |  |  |  |
| SDR-2-CON-TS-ZA-2530 | Sand bedding for TSE HDPE Pipes 125 mm | 2027-01-17 → 2027-01-12 (-5d) | 2027-02-09 → 2027-02-04 (-5d) |  | 0d → 7d |  |
| 2 | **Pipes Laying** | 2027-03-01 → 2027-02-06 (-23d) | 2027-03-29 → 2027-03-02 (-27d) |  |  |  |
| SDR-2-CON-TS-ZA-2510 | Install TSE 125 mm HDPE Pipe | 2027-03-01 → 2027-02-06 (-23d) | 2027-03-29 → 2027-03-02 (-27d) |  | 25d → 44d | SDR-2-CON-TS-ZA-2500, SDR-2-CON-TS-ZA-2530, SDR-2-CLO-AS-E-1010 → SDR-2-CON-TS-ZA-2500, SDR-2-CON-TS-ZA-2530 |
| 5 | **Testing** | 2027-04-13 → 2027-03-18 (-26d) | 2027-04-21 → 2027-03-27 (-25d) |  |  |  |
| SDR-2-CON-TS-ZA-2520 | Testing of TSE HDPE Pipe 125 mm. | 2027-04-13 → 2027-03-18 (-26d) | 2027-04-21 → 2027-03-27 (-25d) |  | 13d → 35d |  |
| 4 | **Backfilling** | 2027-04-28 → 2027-04-15 (-13d) | 2027-05-24 → 2027-05-05 (-19d) |  |  |  |
| SDR-2-CON-TS-ZA-2540 | Backfilling of TSE HDPE Pipe 125 mm. | 2027-04-28 → 2027-04-15 (-13d) | 2027-05-24 → 2027-05-05 (-19d) |  | 8d → 20d | SDR-2-TC-SN-1030 SS, SDR-2-TC-CW-1010, SDR-2-CON-PW-ZA-2320, SDR-2-CON-PW-ZA-2350, SDR-2-CON-PW-ZA-1070 SS, SDR-2-CON-PW-ZA-2210, SDR-2-CON-TS-ZA-2590, SDR-2-CON-TS-ZA-3090 SS, SDR-2-CON-TS-ZA-3040, SDR-2-CON-TS-ZA-2990, SDR-2-CON-TS-ZA-2940, SDR-2-CON-TS-ZA-2490, SDR-2-CON-TS-ZA-2440, SDR-2-CON-TS-ZA-2360, SDR-2-CON-TS-ZA-2390, SDR-2-CON-TS-ZA-3190, SDR-2-CON-TS-ZA-3140, SDR-2-CON-TS-ZA-2190, SDR-2-CON-TS-ZA-1990, SDR-2-CON-TS-ZA-2140, SDR-2-CON-TS-ZA-1970, SDR-2-CON-TS-ZA-2890, SDR-2-CON-TS-ZA-2840, SDR-2-CON-TS-ZA-2790, SDR-2-CON-TS-ZA-2740, SDR-2-CON-TS-ZA-2690 SS, SDR-2-CON-TS-ZA-2640, SDR-2-CON-TS-ZA-2090, SDR-2-CON-TS-ZA-1950, SDR-2-CON-TS-ZA-2040, SDR-2-CON-TS-ZA-1930 SS, SDR-2-CON-TS-ZA-1930 FF, SDR-2-CON-TS-ZA-2260, SDR-2-CON-TS-ZA-2290, SDR-2-CON-TS-ZA-1070, SDR-2-CON-TS-ZA-1910, SDR-2-CON-ST-ZA-6120 SS, SDR-2-CON-ST-ZA-5520 SS, SDR-2-CON-ST-ZA-5970 SS, SDR-2-CON-ST-ZA-5220 SS, SDR-2-CON-ST-ZA-5070 SS, SDR-2-CON-ST-ZA-4920 SS, SDR-2-CON-ST-ZA-4770, SDR-2-CON-ST-ZA-4620, SDR-2-CON-ST-ZA-4470, SDR-2-CON-ST-ZA-4320, SDR-2-CON-ST-ZA-4170, SDR-2-CON-ST-ZA-4020, SDR-2-CON-RW-ZG-2210, SDR-2-CON-RW-ZG-2060, SDR-2-CON-RW-ZG-1910, SDR-2-CON-RW-ZG-1760, SDR-2-CON-RW-ZG-1610, SDR-2-CON-RW-ZG-1460, SDR-2-CON-RW-ZG-1310, SDR-2-CON-RW-ZG-1160, SDR-2-CON-RW-ZA-2830, SDR-2-CON-RW-ZA-2690, SDR-2-CON-RW-ZA-2550, SDR-2-CON-RW-ZA-2410, SDR-2-CON-RW-ZA-2270, SDR-2-CON-RW-ZA-2130, SDR-2-CON-RW-ZA-1990, SDR-2-CON-RW-ZA-1850, SDR-2-CON-RW-ZA-1710, SDR-2-CON-RW-ZA-1570, SDR-2-CON-RW-ZA-1290, SDR-2-CON-RW-ZA-1150, SDR-2-CON-TS-ZA-2520 → SDR-2-TC-CW-1010, SDR-2-CON-PW-ZA-2320, SDR-2-CON-PW-ZA-2350, SDR-2-CON-PW-ZA-1070 SS, SDR-2-CON-PW-ZA-2210, SDR-2-CON-TS-ZA-2590, SDR-2-CON-TS-ZA-3040, SDR-2-CON-TS-ZA-2990, SDR-2-CON-TS-ZA-2940, SDR-2-CON-TS-ZA-2490, SDR-2-CON-TS-ZA-2440, SDR-2-CON-TS-ZA-2360, SDR-2-CON-TS-ZA-2390, SDR-2-CON-TS-ZA-3190, SDR-2-CON-TS-ZA-3140, SDR-2-CON-TS-ZA-2190, SDR-2-CON-TS-ZA-1990, SDR-2-CON-TS-ZA-2140, SDR-2-CON-TS-ZA-1970, SDR-2-CON-TS-ZA-2890, SDR-2-CON-TS-ZA-2840, SDR-2-CON-TS-ZA-2740, SDR-2-CON-TS-ZA-2690 SS, SDR-2-CON-TS-ZA-2090, SDR-2-CON-TS-ZA-1950, SDR-2-CON-TS-ZA-2040, SDR-2-CON-TS-ZA-1930 SS, SDR-2-CON-TS-ZA-1930 FF, SDR-2-CON-TS-ZA-2260, SDR-2-CON-TS-ZA-2290, SDR-2-CON-TS-ZA-1070, SDR-2-CON-TS-ZA-1910, SDR-2-CON-ST-ZA-5970 SS, SDR-2-CON-ST-ZA-5070 SS, SDR-2-CON-ST-ZA-4920 SS, SDR-2-CON-ST-ZA-4770, SDR-2-CON-ST-ZA-4620, SDR-2-CON-ST-ZA-4470, SDR-2-CON-ST-ZA-4320, SDR-2-CON-ST-ZA-4020, SDR-2-CON-RW-ZG-2210, SDR-2-CON-RW-ZG-2060, SDR-2-CON-RW-ZG-1910, SDR-2-CON-RW-ZG-1760, SDR-2-CON-RW-ZG-1610, SDR-2-CON-RW-ZG-1460, SDR-2-CON-RW-ZG-1310, SDR-2-CON-RW-ZG-1160, SDR-2-CON-RW-ZA-2830, SDR-2-CON-RW-ZA-2690, SDR-2-CON-RW-ZA-2550, SDR-2-CON-RW-ZA-2410, SDR-2-CON-RW-ZA-2270, SDR-2-CON-RW-ZA-2130, SDR-2-CON-RW-ZA-1990, SDR-2-CON-RW-ZA-1850, SDR-2-CON-RW-ZA-1710, SDR-2-CON-RW-ZA-1570, SDR-2-CON-RW-ZA-1290, SDR-2-CON-RW-ZA-1150, SDR-2-CON-TS-ZA-2520 |
| 3 | **Valve Chambers & Valves** | 2026-11-30 → 2026-09-28 (-63d) | 2027-04-26 → 2027-04-10 (-16d) |  |  |  |
| 3 | **Excavation** | 2026-11-30 → 2026-09-28 (-63d) | 2027-01-14 → 2026-11-12 (-63d) |  |  |  |
| SDR-2-CON-TS-ZA-3490 | Excavation for Valve Chambers Section 1 | 2026-11-30 → 2026-09-28 (-63d) | 2026-12-22 → 2026-10-20 (-63d) |  | 15d → 69d |  |
| SDR-2-CON-TS-ZA-2560 | Excavation for Valve Chambers Section 2 | 2026-12-23 → 2026-10-21 (-63d) | 2027-01-14 → 2026-11-12 (-63d) |  | 15d → 69d |  |
| 1 | **bedding Works** | 2027-01-16 → 2027-01-06 (-10d) | 2027-02-08 → 2027-01-30 (-9d) |  |  |  |
| SDR-2-CON-TS-ZA-2550 | Sand bedding for Valve Chambers | 2027-01-16 → 2027-01-06 (-10d) | 2027-02-08 → 2027-01-30 (-9d) |  | 15d → 23d |  |
| 4 | **Install Chambers & Valves** | 2027-02-09 → 2027-01-31 (-9d) | 2027-03-06 → 2027-02-24 (-10d) |  |  |  |
| SDR-2-CON-TS-ZA-2570 | Valve Chambers & Valves Installation | 2027-02-09 → 2027-01-31 (-9d) | 2027-03-06 → 2027-02-24 (-10d) |  | 15d → 23d |  |
| 5 | **Testing** | 2027-03-18 → 2027-02-25 (-21d) | 2027-04-04 → 2027-03-18 (-17d) |  |  |  |
| SDR-2-CON-TS-ZA-2580 | Testing Chambers & Valves Installation | 2027-03-18 → 2027-02-25 (-21d) | 2027-04-04 → 2027-03-18 (-17d) |  | 9d → 23d |  |
| 6 | **Backfilling** | 2027-04-07 → 2027-03-22 (-16d) | 2027-04-26 → 2027-04-10 (-16d) |  |  |  |
| SDR-2-CON-TS-ZA-2590 | Backfilling Chambers & Valves Installation | 2027-04-07 → 2027-03-22 (-16d) | 2027-04-26 → 2027-04-10 (-16d) |  | 9d → 23d |  |
| PW | **Portable Water** | 2026-12-14 → 2026-05-06 (-222d) | 2027-05-26 → 2027-05-06 (-20d) |  |  |  |
| ZA | **ZONE A** | 2026-12-14 → 2026-08-13 (-123d) | 2027-05-24 → 2027-05-06 (-18d) |  |  |  |
| 1 | **PORTABLE WATER IN ( PH2-COL-MC10 )** | 2026-12-14 → 2026-08-13 (-123d) | 2027-04-25 → 2027-04-26 (+1d) |  |  |  |
| 7 | **Pipes Work** | 2026-12-14 → 2026-08-13 (-123d) | 2027-04-25 → 2027-03-28 (-28d) |  |  |  |
| 1 | **Excavation** | 2026-12-14 → 2026-08-13 (-123d) | 2027-01-31 → 2027-01-04 (-27d) |  |  |  |
| SDR-2-CON-PW-ZA-3710 | Excavation for PW HDPE Pipes 315 mm Section 1 | 2026-12-14 → 2026-08-13 A (-123d) | 2027-01-06 → 2026-12-07 (-30d) | 0% → 75% | 1d → 8d | SDR-2-CON-RW-ZG-2340, SDR-2-CON-TS-ZA-1000 SS → SDR-2-CON-RW-ZG-2340, SDR-2-CON-TS-ZA-1000 FF |
| SDR-2-CON-PW-ZA-1000 | Excavation for PW HDPE Pipes 315 mm Section 2 | 2027-01-07 → 2026-08-20 A (-140d) | 2027-01-31 → 2027-01-04 (-27d) | 0% → 40% | 16d → 76d | SDR-2-CON-ST-ZA-4730, SDR-2-CON-ST-ZA-4650, SDR-2-CON-RW-ZG-1360, SDR-2-CON-RW-ZA-1620, SDR-2-CON-SL-ZA-3490, SDR-2-CON-RW-ZG-1660, SDR-2-CON-PW-ZA-3710 → SDR-2-CON-RW-ZG-1360, SDR-2-CON-PW-ZA-3710 FF, SDR-2-CON-RW-ZA-1620 FF, SDR-2-CON-RW-ZG-1660 FF, SDR-2-CON-ST-ZA-4730 FF, SDR-2-CON-ST-ZA-4650 FF, SDR-2-CON-SL-ZA-3490 FF |
| 8 | **bedding Works** | 2027-02-01 → 2026-08-25 (-160d) | 2027-02-23 → 2027-02-17 (-6d) |  |  |  |
| SDR-2-CON-PW-ZA-2200 | Sand bedding for PW HDPE Pipes 315 mm | 2027-02-01 → 2026-08-25 A (-160d) | 2027-02-23 → 2027-02-17 (-6d) | 0% → 10% | 16d → 38d | SDR-2-CON-CC-ZA-1820, SDR-2-CON-PW-ZA-1000 → SDR-2-CON-PW-ZA-1000 FF, SDR-2-CON-CC-ZA-1820 FF |
| 2 | **Pipes Laying** | 2027-02-27 → 2026-08-27 (-184d) | 2027-03-23 → 2027-02-23 (-28d) |  |  |  |
| SDR-2-CON-PW-ZA-1010 | Install PW 315 mm HDPE Pipe | 2027-02-27 → 2026-08-27 A (-184d) | 2027-03-23 → 2027-02-23 (-28d) | 0% → 30% | 14d → 34d | SDR-2-CON-SE-ZA-1440, SDR-2-CON-PW-ZA-2200, SDR-2-CON-ST-ZA-3350 → SDR-2-CON-PW-ZA-2200 FF, SDR-2-CON-ST-ZA-3350 FF, SDR-2-CON-SE-ZA-1440 FF |
| 5 | **Testing** | 2027-03-28 → 2027-02-24 (-32d) | 2027-04-04 → 2027-03-03 (-32d) |  |  |  |
| SDR-2-CON-PW-ZA-1080 | Testing of PW HDPE Pipe 315 mm. | 2027-03-28 → 2027-02-24 (-32d) | 2027-04-04 → 2027-03-03 (-32d) |  | 11d → 34d |  |
| 9 | **Backfilling** | 2027-04-06 → 2027-03-04 (-33d) | 2027-04-25 → 2027-03-28 (-28d) |  |  |  |
| SDR-2-CON-PW-ZA-2210 | Backfilling of PW HDPE Pipe 315 mm. | 2027-04-06 → 2027-03-04 (-33d) | 2027-04-25 → 2027-03-28 (-28d) |  | 10d → 34d |  |
| 3 | **Valve Chambers & Valves & Fire Hydrant** | 2026-12-14 → 2026-12-07 (-7d) | 2027-04-20 → 2027-04-26 (+6d) |  |  |  |
| 3 | **Excavation** | 2026-12-14 → 2026-12-07 (-7d) | 2027-01-28 → 2027-01-21 (-7d) |  |  |  |
| SDR-2-CON-PW-ZA-3720 | Excavation for Valve Chambers Section 1 | 2026-12-14 → 2026-12-07 (-7d) | 2027-01-05 → 2026-12-29 (-7d) |  | 14d → 20d |  |
| SDR-2-CON-PW-ZA-1040 | Excavation for Valve Chambers Section 2 | 2027-01-06 → 2026-12-30 (-7d) | 2027-01-28 → 2027-01-21 (-7d) |  | 14d → 20d |  |
| 1 | **bedding Works** | 2027-01-30 → 2027-01-23 (-7d) | 2027-02-16 → 2027-02-09 (-7d) |  |  |  |
| SDR-2-CON-PW-ZA-1020 | Sand bedding for Valve Chambers | 2027-01-30 → 2027-01-23 (-7d) | 2027-02-16 → 2027-02-09 (-7d) |  | 14d → 20d |  |
| 4 | **Install Chambers & Valves & Fire Hydrant** | 2027-02-17 → 2027-02-10 (-7d) | 2027-03-17 → 2027-03-06 (-11d) |  |  |  |
| SDR-2-CON-PW-ZA-1050 | Install Chambers & Valves | 2027-02-17 → 2027-02-10 (-7d) | 2027-03-17 → 2027-03-06 (-11d) |  | 14d → 20d |  |
| 2 | **Testing** | 2027-03-18 → 2027-03-24 (+6d) | 2027-03-27 → 2027-04-01 (+5d) |  |  |  |
| SDR-2-CON-PW-ZA-1030 | Testing for Chambers & Valves | 2027-03-18 → 2027-03-24 (+6d) | 2027-03-27 → 2027-04-01 (+5d) |  | 14d → 9d |  |
| 6 | **Backfilling** | 2027-03-28 → 2027-04-03 (+6d) | 2027-04-20 → 2027-04-26 (+6d) |  |  |  |
| SDR-2-CON-PW-ZA-1070 | Backfilling for Chambers & Valves | 2027-03-28 → 2027-04-03 (+6d) | 2027-04-20 → 2027-04-26 (+6d) |  | 14d → 9d | SDR-2-CON-RW-ZG-1760, SDR-2-CON-PW-ZA-1030 → SDR-2-CON-RW-ZG-1760 SS+2d, SDR-2-CON-PW-ZA-1030 |
| 2 | **PORTABLE WATER IN ( PH2-COL-MC20 )** | 2026-12-20 → 2026-08-16 (-126d) | 2027-04-18 → 2027-04-06 (-12d) |  |  |  |
| 7 | **Pipes Work** | 2026-12-20 → 2026-08-16 (-126d) | 2027-04-17 → 2027-04-05 (-12d) |  |  |  |
| 1 | **Excavation** | 2026-12-20 → 2026-08-16 (-126d) | 2027-02-06 → 2026-12-30 (-38d) |  |  |  |

| ID | Task | Start | Finish | Complete | Total float | Predecessors |
| --- | --- | --- | --- | --- | --- | --- |
| SDR-2-CON-PW-ZA-2260 | Excavation for PW HDPE Pipes 315 mm Section 2 | 2027-01-13 → 2026-08-16 A (-150d) | 2027-02-06 → 2026-12-30 (-38d) | 0% → 40% | 17d → 104d | SDR-2-CON-ST-ZA-4130, SDR-2-CON-RW-ZG-1660, SDR-2-CON-RW-ZG-1510, SDR-2-CON-SL-ZA-3460, SDR-2-CON-ST-ZA-3350, SDR-2-CON-PW-ZA-3730 → SDR-2-CON-PW-ZA-3730, SDR-2-CON-RW-ZG-1510, SDR-2-CON-RW-ZG-1660 FF, SDR-2-CON-ST-ZA-4130 FF, SDR-2-CON-SL-ZA-3460 FF |
| SDR-2-CON-PW-ZA-3730 | Excavation for PW HDPE Pipes 315 mm Section 1 | 2026-12-20 → 2026-08-16 A (-126d) | 2027-01-12 → 2026-09-14 A (-120d) | 0% → 100% | 1d → none | SDR-2-CON-PW-ZA-3710 SS+5d → SDR-2-CON-PW-ZA-3710 |
| 8 | **bedding Works** | 2027-02-07 → 2026-08-20 (-171d) | 2027-02-24 → 2026-12-30 (-56d) |  |  |  |
| SDR-2-CON-PW-ZA-2340 | Sand bedding for PW HDPE Pipes 315 mm | 2027-02-07 → 2026-08-20 A (-171d) | 2027-02-24 → 2026-12-30 (-56d) | 0% → 30% | 17d → 104d | SDR-2-CON-PW-ZA-2260, SDR-2-CON-RW-ZA-1050 → SDR-2-CON-PW-ZA-2260 FF, SDR-2-CON-RW-ZA-1050 |
| 2 | **Pipes Laying** | 2027-02-25 → 2026-08-27 (-182d) | 2027-03-18 → 2026-12-30 (-78d) |  |  |  |
| SDR-2-CON-PW-ZA-2270 | Install PW 315 mm HDPE Pipe | 2027-02-25 → 2026-08-27 A (-182d) | 2027-03-18 → 2026-12-30 (-78d) | 0% → 50% | 17d → 104d | SDR-2-CON-PW-ZA-2340 → SDR-2-CON-PW-ZA-2340 FF |
| 5 | **Testing** | 2027-03-20 → 2026-09-01 (-200d) | 2027-03-28 → 2027-01-21 (-66d) |  |  |  |
| SDR-2-CON-PW-ZA-2330 | Testing of PW HDPE Pipe 315 mm. | 2027-03-20 → 2026-09-01 A (-200d) | 2027-03-28 → 2027-01-21 (-66d) | 0% → 10% | 17d → 85d | SDR-2-CON-SE-ZA-1940, SDR-2-CON-SE-ZA-1930, SDR-2-CON-PW-ZA-2270 → SDR-2-CON-PW-ZA-2270 FF, SDR-2-CON-SE-ZA-1940 FF, SDR-2-CON-SE-ZA-1930 FF |
| 9 | **Backfilling** | 2027-03-29 → 2026-09-03 (-207d) | 2027-04-17 → 2027-04-05 (-12d) |  |  |  |
| SDR-2-CON-PW-ZA-2350 | Backfilling of PW HDPE Pipe 315 mm. | 2027-03-29 → 2026-09-03 A (-207d) | 2027-04-17 → 2027-04-05 (-12d) | 0% → 10% | 17d → 27d | SDR-2-CON-RW-ZG-1610, SDR-2-CON-RW-ZG-1460, SDR-2-CON-PW-ZA-2330 → SDR-2-CON-PW-ZA-2330 FF, SDR-2-CON-RW-ZG-1610 FF, SDR-2-CON-RW-ZG-1460 FF |
| 3 | **Valve Chambers & Valves & Fire Hydrant** | 2026-12-20 → 2026-12-08 (-12d) | 2027-04-18 → 2027-04-06 (-12d) |  |  |  |
| 3 | **Excavation** | 2026-12-20 → 2026-12-08 (-12d) | 2027-02-06 → 2027-01-25 (-12d) |  |  |  |
| SDR-2-CON-PW-ZA-3740 | Excavation for Valve Chambers Section 1 | 2026-12-20 → 2026-12-08 (-12d) | 2027-01-12 → 2026-12-31 (-12d) |  | 16d → 27d |  |
| SDR-2-CON-PW-ZA-2300 | Excavation for Valve Chambers Section 2 | 2027-01-13 → 2027-01-02 (-11d) | 2027-02-06 → 2027-01-25 (-12d) |  | 16d → 27d |  |
| 1 | **bedding Works** | 2027-02-07 → 2027-01-26 (-12d) | 2027-02-24 → 2027-02-11 (-13d) |  |  |  |
| SDR-2-CON-PW-ZA-2280 | Sand bedding for Valve Chambers | 2027-02-07 → 2027-01-26 (-12d) | 2027-02-24 → 2027-02-11 (-13d) |  | 16d → 27d |  |
| 4 | **Install Chambers & Valves & Fire Hydrant** | 2027-02-25 → 2027-02-13 (-12d) | 2027-03-18 → 2027-03-02 (-16d) |  |  |  |
| SDR-2-CON-PW-ZA-2310 | Install Chambers & Valves | 2027-02-25 → 2027-02-13 (-12d) | 2027-03-18 → 2027-03-02 (-16d) |  | 16d → 27d |  |
| 2 | **Testing** | 2027-03-20 → 2027-03-03 (-17d) | 2027-03-27 → 2027-03-15 (-12d) |  |  |  |
| SDR-2-CON-PW-ZA-2290 | Testing for Chambers & Valves | 2027-03-20 → 2027-03-03 (-17d) | 2027-03-27 → 2027-03-15 (-12d) |  | 16d → 27d |  |
| 6 | **Backfilling** | 2027-03-28 → 2027-03-16 (-12d) | 2027-04-18 → 2027-04-06 (-12d) |  |  |  |
| SDR-2-CON-PW-ZA-2320 | Backfilling for Chambers & Valves | 2027-03-28 → 2027-03-16 (-12d) | 2027-04-18 → 2027-04-06 (-12d) |  | 16d → 27d |  |
| 11 | **PORTABLE WATER IN ( PH2-A-MCA0 )** | 2026-12-23 → 2026-12-08 (-15d) | 2027-05-11 → 2027-04-24 (-17d) |  |  |  |
| 7 | **Pipes Work** | 2026-12-23 → 2026-12-08 (-15d) | 2027-05-02 → 2027-04-21 (-11d) |  |  |  |
| 1 | **Excavation** | 2026-12-23 → 2026-12-08 (-15d) | 2027-02-09 → 2027-01-30 (-10d) |  |  |  |
| SDR-2-CON-PW-ZA-3750 | Excavation for PW HDPE Pipe 225 mm. Section 1 | 2026-12-23 → 2026-12-08 (-15d) | 2027-01-16 → 2026-12-31 (-16d) |  | 1d → 8d |  |
| SDR-2-CON-PW-ZA-1200 | Excavation for PW HDPE Pipe 225 mm. Section 2 | 2027-01-17 → 2027-01-06 (-11d) | 2027-02-09 → 2027-01-30 (-10d) |  | 5d → 4d | SDR-2-CON-ST-ZA-5180 FS+3d, SDR-2-CON-ST-ZA-5100 FS+2d, SDR-2-CON-PW-ZA-3750 → SDR-2-CON-PW-ZA-3750, SDR-2-CON-ST-ZA-5100 FS+2d |
| 3 | **bedding Works** | 2027-02-10 → 2027-01-31 (-10d) | 2027-03-06 → 2027-02-23 (-11d) |  |  |  |
| SDR-2-CON-PW-ZA-2220 | Sand bedding for PW HDPE Pipe 225 mm. | 2027-02-10 → 2027-01-31 (-10d) | 2027-03-06 → 2027-02-23 (-11d) |  | 5d → 4d |  |
| 2 | **Pipes Laying** | 2027-03-07 → 2027-02-24 (-11d) | 2027-03-30 → 2027-03-20 (-10d) |  |  |  |
| SDR-2-CON-PW-ZA-1210 | Install PW 225 mm HDPE Pipe | 2027-03-07 → 2027-02-24 (-11d) | 2027-03-30 → 2027-03-20 (-10d) |  | 5d → 4d |  |
| 5 | **Testing** | 2027-04-05 → 2027-03-25 (-11d) | 2027-04-12 → 2027-04-01 (-11d) |  |  |  |
| SDR-2-CON-PW-ZA-1280 | Testing of PW HDPE Pipe 225 mm. | 2027-04-05 → 2027-03-25 (-11d) | 2027-04-12 → 2027-04-01 (-11d) |  | 4d → 3d |  |
| 4 | **Backfilling** | 2027-04-13 → 2027-04-03 (-10d) | 2027-05-02 → 2027-04-21 (-11d) |  |  |  |
| SDR-2-CON-PW-ZA-2230 | Backfilling of PW HDPE Pipe 225 mm. | 2027-04-13 → 2027-04-03 (-10d) | 2027-05-02 → 2027-04-21 (-11d) |  | 4d → 3d |  |
| 3 | **Valve Chambers & Valves & Fire Hydrant** | 2026-12-23 → 2026-12-08 (-15d) | 2027-05-11 → 2027-04-24 (-17d) |  |  |  |
| 3 | **Excavation** | 2026-12-23 → 2026-12-08 (-15d) | 2027-02-07 → 2027-01-23 (-15d) |  |  |  |
| SDR-2-CON-PW-ZA-3760 | Excavation for Valve Chambers Section 1 | 2026-12-23 → 2026-12-08 (-15d) | 2027-01-14 → 2026-12-30 (-15d) |  | 20d → 18d |  |
| SDR-2-CON-PW-ZA-2680 | Excavation for Valve Chambers Section 2 | 2027-01-16 → 2026-12-31 (-16d) | 2027-02-07 → 2027-01-23 (-15d) |  | 20d → 18d |  |
| 1 | **bedding Works** | 2027-02-08 → 2027-01-24 (-15d) | 2027-03-03 → 2027-02-15 (-16d) |  |  |  |
| SDR-2-CON-PW-ZA-2660 | Sand bedding for Valve Chambers | 2027-02-08 → 2027-01-24 (-15d) | 2027-03-03 → 2027-02-15 (-16d) |  | 20d → 18d |  |
| 4 | **Install Chambers & Valves & Fire Hydrant** | 2027-03-04 → 2027-02-16 (-16d) | 2027-03-31 → 2027-03-16 (-15d) |  |  |  |
| SDR-2-CON-PW-ZA-2690 | Install Chambers & Valves | 2027-03-04 → 2027-02-16 (-16d) | 2027-03-31 → 2027-03-16 (-15d) |  | 20d → 18d |  |
| 2 | **Testing** | 2027-04-15 → 2027-03-29 (-17d) | 2027-04-24 → 2027-04-06 (-18d) |  |  |  |
| SDR-2-CON-PW-ZA-2670 | Testing for Chambers & Valves | 2027-04-15 → 2027-03-29 (-17d) | 2027-04-24 → 2027-04-06 (-18d) |  |  |  |
| 6 | **Backfilling** | 2027-04-25 → 2027-04-07 (-18d) | 2027-05-11 → 2027-04-24 (-17d) |  |  |  |
| SDR-2-CON-PW-ZA-2700 | Backfilling for Chambers & Valves | 2027-04-25 → 2027-04-07 (-18d) | 2027-05-11 → 2027-04-24 (-17d) |  |  |  |
| 12 | **PORTABLE WATER IN ( PH2-A-MCB0 )** | 2026-12-27 → 2026-12-12 (-15d) | 2027-05-03 → 2027-05-06 (+3d) |  |  |  |
| 7 | **Pipes Work** | 2026-12-27 → 2026-12-12 (-15d) | 2027-05-03 → 2027-05-06 (+3d) |  |  |  |
| 1 | **Excavation** | 2026-12-27 → 2026-12-12 (-15d) | 2027-02-14 → 2027-01-28 (-17d) |  |  |  |
| SDR-2-CON-PW-ZA-3770 | Excavation for PW HDPE Pipe 225 mm. Section 1 | 2026-12-27 → 2026-12-12 (-15d) | 2027-01-19 → 2027-01-04 (-15d) |  | 1d → 17d |  |
| SDR-2-CON-PW-ZA-2710 | Excavation for PW HDPE Pipe 225 mm. Section 2 | 2027-01-21 → 2027-01-05 (-16d) | 2027-02-14 → 2027-01-28 (-17d) |  | 0d → 17d |  |
| 3 | **bedding Works** | 2027-02-15 → 2027-02-10 (-5d) | 2027-03-16 → 2027-03-07 (-9d) |  |  |  |
| SDR-2-CON-PW-ZA-2740 | Sand bedding for PW HDPE Pipe 225 mm. | 2027-02-15 → 2027-02-10 (-5d) | 2027-03-16 → 2027-03-07 (-9d) |  | 0d → 7d |  |
| 2 | **Pipes Laying** | 2027-03-17 → 2027-03-08 (-9d) | 2027-04-08 → 2027-04-04 (-4d) |  |  |  |
| SDR-2-CON-PW-ZA-2720 | Install PW 225 mm HDPE Pipe | 2027-03-17 → 2027-03-08 (-9d) | 2027-04-08 → 2027-04-04 (-4d) |  | 0d → 7d |  |
| 5 | **Testing** | 2027-04-10 → 2027-04-13 (+3d) | 2027-04-18 → 2027-04-21 (+3d) |  |  |  |
| SDR-2-CON-PW-ZA-2730 | Testing of PW HDPE Pipe 225 mm. | 2027-04-10 → 2027-04-13 (+3d) | 2027-04-18 → 2027-04-21 (+3d) |  |  |  |
| 4 | **Backfilling** | 2027-04-19 → 2027-04-22 (+3d) | 2027-05-03 → 2027-05-06 (+3d) |  |  |  |
| SDR-2-CON-PW-ZA-2750 | Backfilling of PW HDPE Pipe 225 mm. | 2027-04-19 → 2027-04-22 (+3d) | 2027-05-03 → 2027-05-06 (+3d) |  |  |  |
| 3 | **Valve Chambers & Valves & Fire Hydrant** | 2026-12-27 → 2026-12-12 (-15d) | 2027-04-28 → 2027-04-13 (-15d) |  |  |  |
| 3 | **Excavation** | 2026-12-27 → 2026-12-12 (-15d) | 2027-02-13 → 2027-01-28 (-16d) |  |  |  |
| SDR-2-CON-PW-ZA-3780 | Excavation for Valve Chambers Section 1 | 2026-12-27 → 2026-12-12 (-15d) | 2027-01-19 → 2027-01-04 (-15d) |  | 4d → 20d |  |
| SDR-2-CON-PW-ZA-2780 | Excavation for Valve Chambers Section 2 | 2027-01-20 → 2027-01-05 (-15d) | 2027-02-13 → 2027-01-28 (-16d) |  | 4d → 20d |  |
| 1 | **bedding Works** | 2027-02-14 → 2027-01-30 (-15d) | 2027-03-14 → 2027-02-21 (-21d) |  |  |  |
| SDR-2-CON-PW-ZA-2760 | Sand bedding for Valve Chambers | 2027-02-14 → 2027-01-30 (-15d) | 2027-03-14 → 2027-02-21 (-21d) |  | 4d → 20d |  |
| 4 | **Install Chambers & Valves & Fire Hydrant** | 2027-03-15 → 2027-02-23 (-20d) | 2027-04-05 → 2027-03-21 (-15d) |  |  |  |
| SDR-2-CON-PW-ZA-2790 | Install Chambers & Valves | 2027-03-15 → 2027-02-23 (-20d) | 2027-04-05 → 2027-03-21 (-15d) |  | 4d → 20d |  |
| 2 | **Testing** | 2027-04-06 → 2027-03-22 (-15d) | 2027-04-14 → 2027-03-30 (-15d) |  |  |  |
| SDR-2-CON-PW-ZA-2770 | Testing for Chambers & Valves | 2027-04-06 → 2027-03-22 (-15d) | 2027-04-14 → 2027-03-30 (-15d) |  | 4d → 20d |  |

| ID | Task | Start | Finish | Complete | Total float | Predecessors |
| --- | --- | --- | --- | --- | --- | --- |
| 6 | **Backfilling** | 2027-04-15 → 2027-03-31 (-15d) | 2027-04-28 → 2027-04-13 (-15d) |  |  |  |
| SDR-2-CON-PW-ZA-2800 | Backfilling for Chambers & Valves | 2027-04-15 → 2027-03-31 (-15d) | 2027-04-28 → 2027-04-13 (-15d) |  | 4d → 20d |  |
| 3 | **PORTABLE WATER IN ( PH2-A-MCC0 )** | 2026-12-27 → 2026-09-24 (-94d) | 2027-04-29 → 2027-04-14 (-15d) |  |  |  |
| 7 | **Pipes Work** | 2026-12-27 → 2026-09-24 (-94d) | 2027-04-29 → 2027-04-14 (-15d) |  |  |  |
| 1 | **Excavation** | 2026-12-27 → 2026-09-24 (-94d) | 2027-02-13 → 2027-01-28 (-16d) |  |  |  |
| SDR-2-CON-PW-ZA-3790 | Excavation for PW HDPE Pipe 160 mm. Section 1 | 2026-12-27 → 2026-09-24 A (-94d) | 2027-01-19 → 2027-01-04 (-15d) | 0% → 50% | 4d → 19d |  |
| SDR-2-CON-PW-ZA-1400 | Excavation for PW HDPE Pipe 160 mm. Section 2 | 2027-01-20 → 2027-01-05 (-15d) | 2027-02-13 → 2027-01-28 (-16d) |  | 6d → 19d |  |
| 3 | **bedding Works** | 2027-02-14 → 2027-01-30 (-15d) | 2027-03-14 → 2027-02-21 (-21d) |  |  |  |
| SDR-2-CON-PW-ZA-2240 | Sand bedding for PW HDPE Pipe 160 mm. | 2027-02-14 → 2027-01-30 (-15d) | 2027-03-14 → 2027-02-21 (-21d) |  | 6d → 19d |  |
| 2 | **Pipes Laying** | 2027-03-15 → 2027-02-23 (-20d) | 2027-04-06 → 2027-03-22 (-15d) |  |  |  |
| SDR-2-CON-PW-ZA-1410 | Install PW 160 mm HDPE Pipe | 2027-03-15 → 2027-02-23 (-20d) | 2027-04-06 → 2027-03-22 (-15d) |  | 6d → 19d |  |
| 5 | **Testing** | 2027-04-07 → 2027-03-23 (-15d) | 2027-04-15 → 2027-03-31 (-15d) |  |  |  |
| SDR-2-CON-PW-ZA-1480 | Testing of PW HDPE Pipe 160 mm. | 2027-04-07 → 2027-03-23 (-15d) | 2027-04-15 → 2027-03-31 (-15d) |  | 6d → 19d |  |
| 4 | **Backfilling** | 2027-04-17 → 2027-04-01 (-16d) | 2027-04-29 → 2027-04-14 (-15d) |  |  |  |
| SDR-2-CON-PW-ZA-2250 | Backfilling of PW HDPE Pipe 160 mm. | 2027-04-17 → 2027-04-01 (-16d) | 2027-04-29 → 2027-04-14 (-15d) |  | 6d → 19d |  |
| 3 | **Valve Chambers & Valves & Fire Hydrant** | 2026-12-27 → 2026-12-12 (-15d) | 2027-04-29 → 2027-04-14 (-15d) |  |  |  |
| 3 | **Excavation** | 2026-12-27 → 2026-12-12 (-15d) | 2027-02-13 → 2027-01-28 (-16d) |  |  |  |
| SDR-2-CON-PW-ZA-3800 | Excavation for Valve Chambers Section 1 | 2026-12-27 → 2026-12-12 (-15d) | 2027-01-19 → 2027-01-04 (-15d) |  | 6d → 19d |  |
| SDR-2-CON-PW-ZA-3230 | Excavation for Valve Chambers Section 2 | 2027-01-20 → 2027-01-05 (-15d) | 2027-02-13 → 2027-01-28 (-16d) |  | 6d → 19d |  |
| 1 | **bedding Works** | 2027-02-14 → 2027-01-30 (-15d) | 2027-03-14 → 2027-02-21 (-21d) |  |  |  |
| SDR-2-CON-PW-ZA-3210 | Sand bedding for Valve Chambers | 2027-02-14 → 2027-01-30 (-15d) | 2027-03-14 → 2027-02-21 (-21d) |  | 6d → 19d |  |
| 4 | **Install Chambers & Valves & Fire Hydrant** | 2027-03-15 → 2027-02-23 (-20d) | 2027-04-06 → 2027-03-22 (-15d) |  |  |  |
| SDR-2-CON-PW-ZA-3240 | Install Chambers & Valves | 2027-03-15 → 2027-02-23 (-20d) | 2027-04-06 → 2027-03-22 (-15d) |  | 6d → 19d |  |
| 2 | **Testing** | 2027-04-07 → 2027-03-23 (-15d) | 2027-04-13 → 2027-03-29 (-15d) |  |  |  |
| SDR-2-CON-PW-ZA-3220 | Testing for Chambers & Valves | 2027-04-07 → 2027-03-23 (-15d) | 2027-04-13 → 2027-03-29 (-15d) |  | 6d → 19d |  |
| 6 | **Backfilling** | 2027-04-14 → 2027-03-30 (-15d) | 2027-04-29 → 2027-04-14 (-15d) |  |  |  |
| SDR-2-CON-PW-ZA-3250 | Backfilling for Chambers & Valves | 2027-04-14 → 2027-03-30 (-15d) | 2027-04-29 → 2027-04-14 (-15d) |  | 6d → 19d |  |
| 4 | **PORTABLE WATER IN ( PH2-A-MCD0 )** | 2026-12-30 → 2026-09-24 (-97d) | 2027-05-06 → 2027-05-04 (-2d) |  |  |  |
| 7 | **Pipes Work** | 2026-12-30 → 2026-09-24 (-97d) | 2027-04-28 → 2027-04-20 (-8d) |  |  |  |
| 1 | **Excavation** | 2026-12-30 → 2026-09-24 (-97d) | 2027-02-16 → 2027-02-08 (-8d) |  |  |  |
| SDR-2-CON-PW-ZA-3810 | Excavation for PW HDPE Pipe 160 mm. Section 1 | 2026-12-30 → 2026-09-24 A (-97d) | 2027-01-23 → 2027-01-04 (-19d) | 0% → 50% | 4d → 23d |  |
| SDR-2-CON-PW-ZA-3260 | Excavation for PW HDPE Pipe 160 mm. Section 2 | 2027-01-24 → 2027-01-16 (-8d) | 2027-02-16 → 2027-02-08 (-8d) |  | 4.2d → 14d |  |
| 3 | **bedding Works** | 2027-02-17 → 2027-02-09 (-8d) | 2027-03-15 → 2027-03-02 (-13d) |  |  |  |
| SDR-2-CON-PW-ZA-3290 | Sand bedding for PW HDPE Pipe 160 mm. | 2027-02-17 → 2027-02-09 (-8d) | 2027-03-15 → 2027-03-02 (-13d) |  | 4.2d → 14d |  |
| 2 | **Pipes Laying** | 2027-03-16 → 2027-03-03 (-13d) | 2027-04-07 → 2027-03-30 (-8d) |  |  |  |
| SDR-2-CON-PW-ZA-3270 | Install PW 160 mm HDPE Pipe | 2027-03-16 → 2027-03-03 (-13d) | 2027-04-07 → 2027-03-30 (-8d) |  | 4.2d → 14d |  |
| 5 | **Testing** | 2027-04-08 → 2027-03-31 (-8d) | 2027-04-17 → 2027-04-08 (-9d) |  |  |  |
| SDR-2-CON-PW-ZA-3280 | Testing of PW HDPE Pipe 160 mm. | 2027-04-08 → 2027-03-31 (-8d) | 2027-04-17 → 2027-04-08 (-9d) |  | 4.2d → 14d |  |
| 4 | **Backfilling** | 2027-04-18 → 2027-04-10 (-8d) | 2027-04-28 → 2027-04-20 (-8d) |  |  |  |
| SDR-2-CON-PW-ZA-3300 | Backfilling of PW HDPE Pipe 160 mm. | 2027-04-18 → 2027-04-10 (-8d) | 2027-04-28 → 2027-04-20 (-8d) |  | 4.2d → 14d |  |
| 3 | **Valve Chambers & Valves & Fire Hydrant** | 2026-12-30 → 2026-12-12 (-18d) | 2027-05-06 → 2027-05-04 (-2d) |  |  |  |
| 3 | **Excavation** | 2026-12-30 → 2026-12-12 (-18d) | 2027-02-25 → 2027-02-23 (-2d) |  |  |  |
| SDR-2-CON-PW-ZA-3820 | Excavation for Valve Chambers Section 1 | 2026-12-30 → 2026-12-12 (-18d) | 2027-01-23 → 2027-01-04 (-19d) |  | 7d → 23d |  |
| SDR-2-CON-PW-ZA-3330 | Excavation for Valve Chambers Section 2 | 2027-02-01 → 2027-01-30 (-2d) | 2027-02-25 → 2027-02-23 (-2d) |  | 0d → 2d | SDR-2-CON-CC-ZA-1820 FS+8d, SDR-2-CON-CC-ZA-1780, SDR-2-CON-CC-ZA-1660, SDR-2-CON-TE-ZA-3630, SDR-2-CON-PW-ZA-3820 → SDR-2-CON-PW-ZA-3820, SDR-2-CON-CC-ZA-1780, SDR-2-CON-CC-ZA-1660, SDR-2-CON-TE-ZA-3630 |
| 1 | **bedding Works** | 2027-02-27 → 2027-02-24 (-3d) | 2027-03-23 → 2027-03-21 (-2d) |  |  |  |
| SDR-2-CON-PW-ZA-3310 | Sand bedding for Valve Chambers | 2027-02-27 → 2027-02-24 (-3d) | 2027-03-23 → 2027-03-21 (-2d) |  | 0d → 2d |  |
| 4 | **Install Chambers & Valves & Fire Hydrant** | 2027-03-24 → 2027-03-22 (-2d) | 2027-04-15 → 2027-04-13 (-2d) |  |  |  |
| SDR-2-CON-PW-ZA-3340 | Install Chambers & Valves | 2027-03-24 → 2027-03-22 (-2d) | 2027-04-15 → 2027-04-13 (-2d) |  | 0d → 2d |  |
| 2 | **Testing** | 2027-04-17 → 2027-04-14 (-3d) | 2027-04-25 → 2027-04-22 (-3d) |  |  |  |
| SDR-2-CON-PW-ZA-3320 | Testing for Chambers & Valves | 2027-04-17 → 2027-04-14 (-3d) | 2027-04-25 → 2027-04-22 (-3d) |  | 0d → 2d |  |
| 6 | **Backfilling** | 2027-04-26 → 2027-04-24 (-2d) | 2027-05-06 → 2027-05-04 (-2d) |  |  |  |
| SDR-2-CON-PW-ZA-3350 | Backfilling for Chambers & Valves | 2027-04-26 → 2027-04-24 (-2d) | 2027-05-06 → 2027-05-04 (-2d) |  | 0d → 2d |  |
| 5 | **PORTABLE WATER IN ( PH2-A-MCE0 )** | 2027-01-07 → 2026-09-07 (-122d) |  |  |  |  |
| 7 | **Pipes Work** | 2027-01-07 → 2026-09-07 (-122d) | 2027-05-06 → 2027-01-27 (-99d) |  |  |  |
| 1 | **Excavation** | 2027-01-07 → 2026-09-07 (-122d) | 2027-02-25 → 2026-11-23 (-94d) |  |  |  |
| SDR-2-CON-PW-ZA-3830 | Excavation for PW HDPE Pipe 160 mm. Section 1 | 2027-01-07 → 2026-09-07 A (-122d) | 2027-01-31 → 2026-09-14 A (-139d) | 0% → 100% | 0d → none | SDR-2-CON-PW-ZA-3810 SS+3d, SDR-2-CON-CC-ZA-1640, SDR-2-CON-CC-ZA-1620, SDR-2-CON-TE-ZA-4530, SDR-2-CON-TE-ZA-4540, SDR-2-CON-TE-ZA-4350, SDR-2-CON-TE-ZA-4360, SDR-2-CON-TE-ZA-4260, SDR-2-CON-TE-ZA-4270, SDR-2-CON-MV-ZA-1340, SDR-2-CON-TE-ZA-3730, SDR-2-CON-TE-ZA-3640 → SDR-2-CON-TE-ZA-4540 SS, SDR-2-CON-TE-ZA-4360 SS |
| SDR-2-CON-PW-ZA-3360 | Excavation for PW HDPE Pipe 160 mm. Section 2 | 2027-02-01 → 2026-10-31 (-93d) | 2027-02-25 → 2026-11-23 (-94d) |  | 0d → 80d |  |
| 3 | **bedding Works** | 2027-02-27 → 2026-11-24 (-95d) | 2027-03-23 → 2026-12-14 (-99d) |  |  |  |
| SDR-2-CON-PW-ZA-3390 | Sand bedding for PW HDPE Pipe 160 mm. | 2027-02-27 → 2026-11-24 (-95d) | 2027-03-23 → 2026-12-14 (-99d) |  | 0d → 80d |  |
| 2 | **Pipes Laying** | 2027-03-24 → 2026-12-15 (-99d) | 2027-04-10 → 2026-12-31 (-100d) |  |  |  |
| SDR-2-CON-PW-ZA-3370 | Install PW 160 mm HDPE Pipe | 2027-03-24 → 2026-12-15 (-99d) | 2027-04-10 → 2026-12-31 (-100d) |  | 0d → 80d |  |
| 5 | **Testing** | 2027-04-11 → 2027-01-02 (-99d) | 2027-04-19 → 2027-01-10 (-99d) |  |  |  |
| SDR-2-CON-PW-ZA-3380 | Testing of PW HDPE Pipe 160 mm. | 2027-04-11 → 2027-01-02 (-99d) | 2027-04-19 → 2027-01-10 (-99d) |  | 0d → 80d |  |
| 4 | **Backfilling** | 2027-04-20 → 2027-01-11 (-99d) | 2027-05-06 → 2027-01-27 (-99d) |  |  |  |
| SDR-2-CON-PW-ZA-3400 | Backfilling of PW HDPE Pipe 160 mm. | 2027-04-20 → 2027-01-11 (-99d) | 2027-05-06 → 2027-01-27 (-99d) |  | 0d → 80d |  |
| 3 | **Valve Chambers & Valves & Fire Hydrant** | 2027-01-07 → 2026-09-28 (-101d) |  |  |  |  |
| 3 | **Excavation** | 2027-01-07 → 2026-09-28 (-101d) |  |  |  |  |
| SDR-2-CON-PW-ZA-3840 | Excavation for Valve Chambers Section 1 | 2027-01-07 → 2026-09-28 (-101d) | 2027-01-30 → 2026-10-20 (-102d) |  | 0d → 87d |  |
| SDR-2-CON-PW-ZA-3430 | Excavation for Valve Chambers Section 2 | 2027-01-31 → 2027-01-30 (-1d) |  |  | 0d → 0.81d |  |
| 1 | **bedding Works** | 2027-02-24 → 2027-02-23 (-1d) |  |  |  |  |

| ID | Task | Start | Finish | Total float |
| --- | --- | --- | --- | --- |
| SDR-2-CON-PW-ZA-3410 | Sand bedding for Valve Chambers | 2027-02-24 → 2027-02-23 (-1d) |  | 0d → 0.81d |
| 4 | **Install Chambers & Valves & Fire Hydrant** | 2027-03-22 → 2027-03-21 (-1d) |  |  |
| SDR-2-CON-PW-ZA-3440 | Install Chambers & Valves | 2027-03-22 → 2027-03-21 (-1d) |  | 0d → 0.81d |
| 2 | **Testing** | 2027-04-11 → 2027-04-10 (-1d) |  |  |
| SDR-2-CON-PW-ZA-3420 | Testing for Chambers & Valves | 2027-04-11 → 2027-04-10 (-1d) |  | 0d → 0.81d |
| 6 | **Backfilling** | 2027-04-20 → 2027-04-19 (-1d) |  |  |
| SDR-2-CON-PW-ZA-3450 | Backfilling for Chambers & Valves | 2027-04-20 → 2027-04-19 (-1d) |  | 0d → 0.81d |
| 6 | **PORTABLE WATER IN ( PH2-A-MCF0 )** | 2027-01-11 → 2026-12-22 (-20d) | 2027-05-10 → 2027-04-20 (-20d) |  |
| 7 | **Pipes Work** | 2027-01-11 → 2026-12-22 (-20d) | 2027-05-10 → 2027-04-20 (-20d) |  |
| 1 | **Excavation** | 2027-01-11 → 2026-12-22 (-20d) | 2027-03-01 → 2027-02-08 (-21d) |  |
| SDR-2-CON-PW-ZA-3850 | Excavation for PW HDPE Pipe 160 mm. Section 1 | 2027-01-11 → 2026-12-22 (-20d) | 2027-02-03 → 2027-01-14 (-20d) | 0d → 7d |
| SDR-2-CON-PW-ZA-3460 | Excavation for PW HDPE Pipe 160 mm. Section 2 | 2027-02-04 → 2027-01-16 (-19d) | 2027-03-01 → 2027-02-08 (-21d) | 9d → 14d |
| 3 | **bedding Works** | 2027-03-02 → 2027-02-09 (-21d) | 2027-03-27 → 2027-03-02 (-25d) |  |
| SDR-2-CON-PW-ZA-3490 | Sand bedding for PW HDPE Pipe 160 mm. | 2027-03-02 → 2027-02-09 (-21d) | 2027-03-27 → 2027-03-02 (-25d) | 9d → 14d |
| 2 | **Pipes Laying** | 2027-03-28 → 2027-03-03 (-25d) | 2027-04-19 → 2027-03-30 (-20d) |  |
| SDR-2-CON-PW-ZA-3470 | Install PW 160 mm HDPE Pipe | 2027-03-28 → 2027-03-03 (-25d) | 2027-04-19 → 2027-03-30 (-20d) | 9d → 14d |
| 5 | **Testing** | 2027-04-20 → 2027-03-31 (-20d) | 2027-04-26 → 2027-04-06 (-20d) |  |
| SDR-2-CON-PW-ZA-3480 | Testing of PW HDPE Pipe 160 mm. | 2027-04-20 → 2027-03-31 (-20d) | 2027-04-26 → 2027-04-06 (-20d) | 9d → 14d |
| 4 | **Backfilling** | 2027-04-27 → 2027-04-07 (-20d) | 2027-05-10 → 2027-04-20 (-20d) |  |
| SDR-2-CON-PW-ZA-3500 | Backfilling of PW HDPE Pipe 160 mm. | 2027-04-27 → 2027-04-07 (-20d) | 2027-05-10 → 2027-04-20 (-20d) | 9d → 14d |
| 3 | **Valve Chambers & Valves & Fire Hydrant** | 2027-01-11 → 2026-12-22 (-20d) | 2027-05-10 → 2027-04-20 (-20d) |  |
| 3 | **Excavation** | 2027-01-11 → 2026-12-22 (-20d) | 2027-03-01 → 2027-02-08 (-21d) |  |
| SDR-2-CON-PW-ZA-3860 | Excavation for Valve Chambers Section 1 | 2027-01-11 → 2026-12-22 (-20d) | 2027-02-03 → 2027-01-14 (-20d) | 8d → 14d |
| SDR-2-CON-PW-ZA-3530 | Excavation for Valve Chambers Section 2 | 2027-02-04 → 2027-01-16 (-19d) | 2027-03-01 → 2027-02-08 (-21d) | 8d → 14d |
| 1 | **bedding Works** | 2027-03-02 → 2027-02-09 (-21d) | 2027-03-27 → 2027-03-02 (-25d) |  |
| SDR-2-CON-PW-ZA-3510 | Sand bedding for Valve Chambers | 2027-03-02 → 2027-02-09 (-21d) | 2027-03-27 → 2027-03-02 (-25d) | 8d → 14d |
| 4 | **Install Chambers & Valves & Fire Hydrant** | 2027-03-28 → 2027-03-03 (-25d) | 2027-04-19 → 2027-03-30 (-20d) |  |
| SDR-2-CON-PW-ZA-3540 | Install Chambers & Valves | 2027-03-28 → 2027-03-03 (-25d) | 2027-04-19 → 2027-03-30 (-20d) | 8d → 14d |
| 2 | **Testing** | 2027-04-20 → 2027-03-31 (-20d) | 2027-04-27 → 2027-04-07 (-20d) |  |
| SDR-2-CON-PW-ZA-3520 | Testing for Chambers & Valves | 2027-04-20 → 2027-03-31 (-20d) | 2027-04-27 → 2027-04-07 (-20d) | 8d → 14d |
| 6 | **Backfilling** | 2027-04-28 → 2027-04-08 (-20d) | 2027-05-10 → 2027-04-20 (-20d) |  |
| SDR-2-CON-PW-ZA-3550 | Backfilling for Chambers & Valves | 2027-04-28 → 2027-04-08 (-20d) | 2027-05-10 → 2027-04-20 (-20d) | 8d → 14d |
| 7 | **PORTABLE WATER IN ( PH2-A-MCG0 )** | 2027-01-14 → 2026-12-26 (-19d) | 2027-05-12 → 2027-05-02 (-10d) |  |
| 7 | **Pipes Work** | 2027-01-14 → 2026-12-26 (-19d) | 2027-05-12 → 2027-04-22 (-20d) |  |
| 1 | **Excavation** | 2027-01-14 → 2026-12-26 (-19d) | 2027-03-04 → 2027-02-11 (-21d) |  |
| SDR-2-CON-PW-ZA-3870 | Excavation for PW HDPE Pipe 160 mm. Section 1 | 2027-01-14 → 2026-12-26 (-19d) | 2027-02-07 → 2027-01-18 (-20d) | 0d → 7d |
| SDR-2-CON-PW-ZA-3560 | Excavation for PW HDPE Pipe 160 mm. Section 2 | 2027-02-08 → 2027-01-19 (-20d) | 2027-03-04 → 2027-02-11 (-21d) | 5d → 12d |
| 3 | **bedding Works** | 2027-03-06 → 2027-02-13 (-21d) | 2027-04-01 → 2027-03-08 (-24d) |  |
| SDR-2-CON-PW-ZA-3590 | Sand bedding for PW HDPE Pipe 160 mm. | 2027-03-06 → 2027-02-13 (-21d) | 2027-04-01 → 2027-03-08 (-24d) | 8d → 12d |
| 2 | **Pipes Laying** | 2027-04-03 → 2027-03-14 (-20d) | 2027-04-18 → 2027-03-29 (-20d) |  |
| SDR-2-CON-PW-ZA-3570 | Install PW 160 mm HDPE Pipe | 2027-04-03 → 2027-03-14 (-20d) | 2027-04-18 → 2027-03-29 (-20d) | 8d → 12d |
| 5 | **Testing** | 2027-04-19 → 2027-03-30 (-20d) | 2027-04-27 → 2027-04-07 (-20d) |  |
| SDR-2-CON-PW-ZA-3580 | Testing of PW HDPE Pipe 160 mm. | 2027-04-19 → 2027-03-30 (-20d) | 2027-04-27 → 2027-04-07 (-20d) | 8d → 12d |
| 4 | **Backfilling** | 2027-04-28 → 2027-04-08 (-20d) | 2027-05-12 → 2027-04-22 (-20d) |  |
| SDR-2-CON-PW-ZA-3600 | Backfilling of PW HDPE Pipe 160 mm. | 2027-04-28 → 2027-04-08 (-20d) | 2027-05-12 → 2027-04-22 (-20d) | 8d → 12d |
| 3 | **Valve Chambers & Valves & Fire Hydrant** | 2027-01-14 → 2027-01-04 (-10d) | 2027-05-12 → 2027-05-02 (-10d) |  |
| 3 | **Excavation** | 2027-01-14 → 2027-01-04 (-10d) | 2027-03-04 → 2027-02-21 (-11d) |  |
| SDR-2-CON-PW-ZA-3880 | Excavation for Valve Chambers Section 1 | 2027-01-14 → 2027-01-04 (-10d) | 2027-02-07 → 2027-01-27 (-11d) | 5d → 4d |
| SDR-2-CON-PW-ZA-3630 | Excavation for Valve Chambers Section 2 | 2027-02-08 → 2027-01-28 (-11d) | 2027-03-04 → 2027-02-21 (-11d) | 5d → 4d |
| 1 | **bedding Works** | 2027-03-06 → 2027-02-23 (-11d) | 2027-04-01 → 2027-03-22 (-10d) |  |
| SDR-2-CON-PW-ZA-3610 | Sand bedding for Valve Chambers | 2027-03-06 → 2027-02-23 (-11d) | 2027-04-01 → 2027-03-22 (-10d) | 5d → 4d |
| 4 | **Install Chambers & Valves & Fire Hydrant** | 2027-04-03 → 2027-03-23 (-11d) | 2027-04-21 → 2027-04-11 (-10d) |  |
| SDR-2-CON-PW-ZA-3640 | Install Chambers & Valves | 2027-04-03 → 2027-03-23 (-11d) | 2027-04-21 → 2027-04-11 (-10d) | 5d → 4d |
| 2 | **Testing** | 2027-04-22 → 2027-04-12 (-10d) | 2027-05-01 → 2027-04-20 (-11d) |  |
| SDR-2-CON-PW-ZA-3620 | Testing for Chambers & Valves | 2027-04-22 → 2027-04-12 (-10d) | 2027-05-01 → 2027-04-20 (-11d) | 5d → 4d |
| 6 | **Backfilling** | 2027-05-02 → 2027-04-21 (-11d) | 2027-05-12 → 2027-05-02 (-10d) |  |
| SDR-2-CON-PW-ZA-3650 | Backfilling for Chambers & Valves | 2027-05-02 → 2027-04-21 (-11d) | 2027-05-12 → 2027-05-02 (-10d) | 5d → 4d |
| 8 | **PORTABLE WATER IN ( PH2-A-MCH0 )** | 2027-01-18 → 2026-12-29 (-20d) | 2027-05-15 → 2027-04-25 (-20d) |  |
| 7 | **Pipes Work** | 2027-01-18 → 2026-12-29 (-20d) | 2027-05-15 → 2027-04-25 (-20d) |  |
| 1 | **Excavation** | 2027-01-18 → 2026-12-29 (-20d) | 2027-03-08 → 2027-02-15 (-21d) |  |
| SDR-2-CON-PW-ZA-3890 | Excavation for PW HDPE Pipe 225 mm. Section 1 | 2027-01-18 → 2026-12-29 (-20d) | 2027-02-10 → 2027-01-21 (-20d) | 0d → 7d |
| SDR-2-CON-PW-ZA-2810 | Excavation for PW HDPE Pipe 225 mm. Section 2 | 2027-02-11 → 2027-01-23 (-19d) | 2027-03-08 → 2027-02-15 (-21d) | 5d → 10d |
| 3 | **bedding Works** | 2027-03-14 → 2027-02-16 (-26d) | 2027-04-05 → 2027-03-16 (-20d) |  |
| SDR-2-CON-PW-ZA-2840 | Sand bedding for PW HDPE Pipe 225 mm. | 2027-03-14 → 2027-02-16 (-26d) | 2027-04-05 → 2027-03-16 (-20d) | 5d → 10d |
| 2 | **Pipes Laying** | 2027-04-06 → 2027-03-17 (-20d) | 2027-04-22 → 2027-04-03 (-19d) |  |
| SDR-2-CON-PW-ZA-2820 | Install PW 225 mm HDPE Pipe | 2027-04-06 → 2027-03-17 (-20d) | 2027-04-22 → 2027-04-03 (-19d) | 5d → 10d |
| 5 | **Testing** | 2027-04-24 → 2027-04-04 (-20d) | 2027-05-01 → 2027-04-11 (-20d) |  |
| SDR-2-CON-PW-ZA-2830 | Testing of PW HDPE Pipe 225 mm. | 2027-04-24 → 2027-04-04 (-20d) | 2027-05-01 → 2027-04-11 (-20d) | 5d → 10d |
| 4 | **Backfilling** | 2027-05-02 → 2027-04-12 (-20d) | 2027-05-15 → 2027-04-25 (-20d) |  |
| SDR-2-CON-PW-ZA-2850 | Backfilling of PW HDPE Pipe 225 mm. | 2027-05-02 → 2027-04-12 (-20d) | 2027-05-15 → 2027-04-25 (-20d) | 5d → 10d |

| ID | Task | Start | Finish | Complete | Total float | Predecessors | Other |
| --- | --- | --- | --- | --- | --- | --- | --- |
| 3 | **Valve Chambers & Valves & Fire Hydrant** | 2027-01-18 → 2026-12-29 (-20d) | 2027-05-15 → 2027-04-25 (-20d) |  |  |  |  |
| 3 | **Excavation** | 2027-01-18 → 2026-12-29 (-20d) | 2027-03-08 → 2027-02-15 (-21d) |  |  |  |  |
| SDR-2-CON-PW-ZA-3900 | Excavation for Valve Chambers Section 1 | 2027-01-18 → 2026-12-29 (-20d) | 2027-02-10 → 2027-01-21 (-20d) |  | 5d → 10d |  |  |
| SDR-2-CON-PW-ZA-2880 | Excavation for Valve Chambers Section 2 | 2027-02-11 → 2027-01-23 (-19d) | 2027-03-08 → 2027-02-15 (-21d) |  | 5d → 10d |  | resources Labor [25.6 h]; Plumber [152.86 h]; Excavator [12.9 h]; Excavator Operator [191.07 h]; Grader [220 h]; Un-Skilled Labor [191.07 h]; Skilled Labor [191.07 h]; SIC- Cost [56482.5]; Plumbing Helper [152.86 h]; Dump Truck [600 h]; Loader [210 h] → SIC- Cost [56482.5]; Plumbing Helper [152.86 h]; Dump Truck [600 h]; Loader [210 h]; Labor [25.6 h]; Plumber [152.86 h]; Excavator [12.9 h]; Excavator Operator [191.07 h]; Grader [220 h]; Un-Skilled Labor [191.07 h]; Skilled Labor [191.07 h] |
| 1 | **bedding Works** | 2027-03-14 → 2027-02-16 (-26d) | 2027-04-05 → 2027-03-16 (-20d) |  |  |  |  |
| SDR-2-CON-PW-ZA-2860 | Sand bedding for Valve Chambers | 2027-03-14 → 2027-02-16 (-26d) | 2027-04-05 → 2027-03-16 (-20d) |  | 5d → 10d |  |  |
| 4 | **Install Chambers & Valves & Fire Hydrant** | 2027-04-06 → 2027-03-17 (-20d) | 2027-04-22 → 2027-04-03 (-19d) |  |  |  |  |
| SDR-2-CON-PW-ZA-2890 | Install Chambers & Valves | 2027-04-06 → 2027-03-17 (-20d) | 2027-04-22 → 2027-04-03 (-19d) |  | 5d → 10d |  |  |
| 2 | **Testing** | 2027-04-24 → 2027-04-04 (-20d) | 2027-05-01 → 2027-04-11 (-20d) |  |  |  |  |
| SDR-2-CON-PW-ZA-2870 | Testing for Chambers & Valves | 2027-04-24 → 2027-04-04 (-20d) | 2027-05-01 → 2027-04-11 (-20d) |  | 5d → 10d |  |  |
| 6 | **Backfilling** | 2027-05-02 → 2027-04-12 (-20d) | 2027-05-15 → 2027-04-25 (-20d) |  |  |  |  |
| SDR-2-CON-PW-ZA-2900 | Backfilling for Chambers & Valves | 2027-05-02 → 2027-04-12 (-20d) | 2027-05-15 → 2027-04-25 (-20d) |  | 5d → 10d |  |  |
| 9 | **PORTABLE WATER IN ( PH2-ART-MC00 )** | 2027-01-21 → 2027-01-02 (-19d) | 2027-05-22 → 2027-04-26 (-26d) |  |  |  |  |
| 7 | **Pipes Work** | 2027-01-21 → 2027-01-02 (-19d) | 2027-05-22 → 2027-04-26 (-26d) |  |  |  |  |
| 1 | **Excavation** | 2027-01-21 → 2027-01-02 (-19d) | 2027-03-16 → 2027-02-18 (-26d) |  |  |  |  |
| SDR-2-CON-PW-ZA-3910 | Excavation for PW HDPE Pipes 315 mm Section 1 | 2027-01-21 → 2027-01-02 (-19d) | 2027-02-14 → 2027-01-25 (-20d) |  | 0d → 7d |  |  |
| SDR-2-CON-PW-ZA-2360 | Excavation for PW HDPE Pipes 315 mm Section 2 | 2027-02-15 → 2027-01-26 (-20d) | 2027-03-16 → 2027-02-18 (-26d) |  | 0d → 9d |  |  |
| 8 | **bedding Works** | 2027-03-17 → 2027-02-20 (-25d) | 2027-04-08 → 2027-03-20 (-19d) |  |  |  |  |
| SDR-2-CON-PW-ZA-2440 | Sand bedding for PW HDPE Pipes 315 mm | 2027-03-17 → 2027-02-20 (-25d) | 2027-04-08 → 2027-03-20 (-19d) |  | 0d → 9d |  |  |
| 2 | **Pipes Laying** | 2027-04-10 → 2027-03-21 (-20d) | 2027-04-28 → 2027-04-08 (-20d) |  |  |  |  |
| SDR-2-CON-PW-ZA-2370 | Install PW 315 mm HDPE Pipe | 2027-04-10 → 2027-03-21 (-20d) | 2027-04-28 → 2027-04-08 (-20d) |  | 0d → 9d |  |  |
| 5 | **Testing** | 2027-04-29 → 2027-04-10 (-19d) | 2027-05-06 → 2027-04-17 (-19d) |  |  |  |  |
| SDR-2-CON-PW-ZA-2430 | Testing of PW HDPE Pipe 315 mm. | 2027-04-29 → 2027-04-10 (-19d) | 2027-05-06 → 2027-04-17 (-19d) |  | 0d → 9d |  |  |
| 9 | **Backfilling** | 2027-05-08 → 2027-04-18 (-20d) | 2027-05-22 → 2027-04-26 (-26d) |  |  |  |  |
| SDR-2-CON-PW-ZA-2450 | Backfilling of PW HDPE Pipe 315 mm. | 2027-05-08 → 2027-04-18 (-20d) | 2027-05-22 → 2027-04-26 (-26d) |  | 0d → 9d |  |  |
| 3 | **Valve Chambers & Valves & Fire Hydrant** | 2027-01-21 → 2027-01-02 (-19d) | 2027-05-22 → 2027-04-26 (-26d) |  |  |  |  |
| 3 | **Excavation** | 2027-01-21 → 2027-01-02 (-19d) | 2027-03-16 → 2027-02-18 (-26d) |  |  |  |  |
| SDR-2-CON-PW-ZA-3920 | Excavation for Valve Chambers Section 1 | 2027-01-21 → 2027-01-02 (-19d) | 2027-02-14 → 2027-01-25 (-20d) |  | 0d → 9d |  |  |
| SDR-2-CON-PW-ZA-2400 | Excavation for Valve Chambers Section 2 | 2027-02-15 → 2027-01-26 (-20d) | 2027-03-16 → 2027-02-18 (-26d) |  | 0d → 9d |  |  |
| 1 | **bedding Works** | 2027-03-17 → 2027-02-20 (-25d) | 2027-04-08 → 2027-03-20 (-19d) |  |  |  |  |
| SDR-2-CON-PW-ZA-2380 | Sand bedding for Valve Chambers | 2027-03-17 → 2027-02-20 (-25d) | 2027-04-08 → 2027-03-20 (-19d) |  | 0d → 9d |  |  |
| 4 | **Install Chambers & Valves & Fire Hydrant** | 2027-04-10 → 2027-03-21 (-20d) | 2027-04-27 → 2027-04-07 (-20d) |  |  |  |  |
| SDR-2-CON-PW-ZA-2410 | Install Chambers & Valves | 2027-04-10 → 2027-03-21 (-20d) | 2027-04-27 → 2027-04-07 (-20d) |  | 0d → 9d |  |  |
| 2 | **Testing** | 2027-04-28 → 2027-04-08 (-20d) | 2027-05-06 → 2027-04-17 (-19d) |  |  |  |  |
| SDR-2-CON-PW-ZA-2390 | Testing for Chambers & Valves | 2027-04-28 → 2027-04-08 (-20d) | 2027-05-06 → 2027-04-17 (-19d) |  | 0d → 9d |  |  |
| 6 | **Backfilling** | 2027-05-08 → 2027-04-18 (-20d) | 2027-05-22 → 2027-04-26 (-26d) |  |  |  |  |
| SDR-2-CON-PW-ZA-2420 | Backfilling for Chambers & Valves | 2027-05-08 → 2027-04-18 (-20d) | 2027-05-22 → 2027-04-26 (-26d) |  | 0d → 9d |  |  |
| 10 | **PORTABLE WATER IN ( PH2-ART-MC10 )** | 2027-01-24 → 2027-01-04 (-20d) | 2027-05-24 → 2027-05-03 (-21d) |  |  |  |  |
| 7 | **Pipes Work** | 2027-01-24 → 2027-01-28 (+4d) | 2027-05-24 → 2027-05-03 (-21d) |  |  |  |  |
| 1 | **Excavation** | 2027-01-24 → 2027-01-28 (+4d) | 2027-03-18 → 2027-02-21 (-25d) |  |  |  |  |
| SDR-2-CON-PW-ZA-2460 | Excavation for PW HDPE Pipes 315 mm Section 2 | 2027-02-17 → 2027-01-28 (-20d) | 2027-03-18 → 2027-02-21 (-25d) |  | 0d → 7d |  |  |
| SDR-2-CON-PW-ZA-3930 | Excavation for PW HDPE Pipes 315 mm Section 1 | 2027-01-24 → 2027-09-24 A (+243d) | 2027-02-16 → 2027-01-27 (-20d) | 0% → 25% | 0d → 7d |  |  |
| 8 | **bedding Works** | 2027-03-20 → 2027-02-23 (-25d) | 2027-04-11 → 2027-03-22 (-20d) |  |  |  |  |
| SDR-2-CON-PW-ZA-2540 | Sand bedding for PW HDPE Pipes 315 mm | 2027-03-20 → 2027-02-23 (-25d) | 2027-04-11 → 2027-03-22 (-20d) |  | 0d → 7d |  |  |
| 2 | **Pipes Laying** | 2027-04-12 → 2027-03-23 (-20d) | 2027-04-28 → 2027-04-08 (-20d) |  |  |  |  |
| SDR-2-CON-PW-ZA-2470 | Install PW 315 mm HDPE Pipe | 2027-04-12 → 2027-03-23 (-20d) | 2027-04-28 → 2027-04-08 (-20d) |  | 0d → 7d |  |  |
| 5 | **Testing** | 2027-04-29 → 2027-04-10 (-19d) | 2027-05-06 → 2027-04-17 (-19d) |  |  |  |  |
| SDR-2-CON-PW-ZA-2530 | Testing of PW HDPE Pipe 315 mm. | 2027-04-29 → 2027-04-10 (-19d) | 2027-05-06 → 2027-04-17 (-19d) |  | 0d → 7d |  |  |
| 9 | **Backfilling** | 2027-05-08 → 2027-04-22 (-16d) | 2027-05-24 → 2027-05-03 (-21d) |  |  |  |  |
| SDR-2-CON-PW-ZA-2550 | Backfilling of PW HDPE Pipe 315 mm. | 2027-05-08 → 2027-04-22 (-16d) | 2027-05-24 → 2027-05-03 (-21d) |  | 0d → 3d |  |  |
| 3 | **Valve Chambers & Valves & Fire Hydrant** | 2027-01-24 → 2027-01-04 (-20d) | 2027-05-24 → 2027-04-28 (-26d) |  |  |  |  |
| 3 | **Excavation** | 2027-01-24 → 2027-01-04 (-20d) | 2027-03-18 → 2027-02-21 (-25d) |  |  |  |  |
| SDR-2-CON-PW-ZA-3940 | Excavation for Valve Chambers Section 1 | 2027-01-24 → 2027-01-04 (-20d) | 2027-02-16 → 2027-01-27 (-20d) |  | 0d → 7d |  |  |
| SDR-2-CON-PW-ZA-2500 | Excavation for Valve Chambers Section 2 | 2027-02-17 → 2027-01-28 (-20d) | 2027-03-18 → 2027-02-21 (-25d) |  | 0d → 7d |  |  |
| 1 | **bedding Works** | 2027-03-20 → 2027-02-23 (-25d) | 2027-04-11 → 2027-03-22 (-20d) |  |  |  |  |
| SDR-2-CON-PW-ZA-2480 | Sand bedding for Valve Chambers | 2027-03-20 → 2027-02-23 (-25d) | 2027-04-11 → 2027-03-22 (-20d) |  | 0d → 7d |  |  |
| 4 | **Install Chambers & Valves & Fire Hydrant** | 2027-04-12 → 2027-03-23 (-20d) | 2027-04-27 → 2027-04-07 (-20d) |  |  |  |  |
| SDR-2-CON-PW-ZA-2510 | Install Chambers & Valves | 2027-04-12 → 2027-03-23 (-20d) | 2027-04-27 → 2027-04-07 (-20d) |  | 0d → 7d |  |  |
| 2 | **Testing** | 2027-04-28 → 2027-04-08 (-20d) | 2027-05-06 → 2027-04-17 (-19d) |  |  |  |  |
| SDR-2-CON-PW-ZA-2490 | Testing for Chambers & Valves | 2027-04-28 → 2027-04-08 (-20d) | 2027-05-06 → 2027-04-17 (-19d) |  | 0d → 7d |  |  |
| 6 | **Backfilling** | 2027-05-08 → 2027-04-18 (-20d) | 2027-05-24 → 2027-04-28 (-26d) |  |  |  |  |
| SDR-2-CON-PW-ZA-2520 | Backfilling for Chambers & Valves | 2027-05-08 → 2027-04-18 (-20d) | 2027-05-24 → 2027-04-28 (-26d) |  | 0d → 7d |  |  |
| ZG | **ZONE G** | 2027-01-03 → 2026-05-06 (-242d) | 2027-05-26 → 2027-04-18 (-38d) |  |  |  |  |
| 1 | **PORTABLE WATER IN ( PH2-G-MCA0 )** | 2027-01-18 → 2026-05-06 (-257d) | 2027-05-15 → 2027-01-17 (-118d) |  |  |  |  |
| 7 | **Pipes Work** | 2027-01-18 → 2026-05-06 (-257d) | 2027-05-15 → 2026-10-24 (-203d) |  |  |  |  |
| 1 | **Excavation** | 2027-01-18 → 2026-05-06 (-257d) | 2027-03-08 → 2026-08-20 (-200d) |  |  |  |  |
| SDR-2-CON-PW-ZG-1520 | Excavation for PW HDPE Pipes 400 mm Section 1 | 2027-01-18 → 2026-05-06 A (-257d) | 2027-02-10 → 2026-05-24 A (-262d) | 0% → 100% | 3d → none | SDR-2-CON-MV-ZA-1180, SDR-2-CON-TS-ZA-2300 → SDR-2-CON-TS-ZA-2300 SS |  |
| SDR-2-CON-PW-ZG-1000 | Excavation for PW HDPE Pipes 400 mm Section 2 | 2027-02-11 → 2026-06-22 A (-234d) | 2027-03-08 → 2026-08-20 A (-200d) | 0% → 100% | 5d → none |  |  |
| 3 | **bedding Works** | 2027-03-14 → 2026-08-01 (-225d) | 2027-03-31 → 2026-09-28 (-184d) |  |  |  |  |
| SDR-2-CON-PW-ZG-1500 | Sand bedding for PW HDPE Pipes 400 mm | 2027-03-14 → 2026-08-01 A (-225d) | 2027-03-31 → 2026-09-28 (-184d) | 0% → 92% | 5d → 162d |  |  |

| ID | Task | Start | Finish | Complete | Total float | Predecessors |
| --- | --- | --- | --- | --- | --- | --- |
| 2 | **Pipes Laying** | 2027-04-01 → 2026-08-13 (-231d) | 2027-04-19 → 2026-09-28 (-203d) |  |  |  |
| SDR-2-CON-PW-ZG-1010 | Install PW 400 mm HDPE Pipe | 2027-04-01 → 2026-08-13 A (-231d) | 2027-04-19 → 2026-09-28 (-203d) | 0% → 92% | 5d → 162d | SDR-2-CON-PW-ZG-1500 → SDR-2-CON-PW-ZG-1500 FF |
| 5 | **Testing** | 2027-04-20 → 2026-09-29 (-203d) | 2027-05-01 → 2026-10-10 (-203d) |  |  |  |
| SDR-2-CON-PW-ZG-1080 | Testing of PW HDPE Pipe 400 mm. | 2027-04-20 → 2026-09-29 (-203d) | 2027-05-01 → 2026-10-10 (-203d) |  | 5d → 162d |  |
| 4 | **Backfilling** | 2027-05-02 → 2026-10-11 (-203d) | 2027-05-15 → 2026-10-24 (-203d) |  |  |  |
| SDR-2-CON-PW-ZG-1510 | Backfilling of PW HDPE Pipe 400 mm. | 2027-05-02 → 2026-10-11 (-203d) | 2027-05-15 → 2026-10-24 (-203d) |  | 5d → 162d |  |
| 3 | **Valve Chambers & Valves & Fire Hydrant** | 2027-01-18 → 2026-09-28 (-112d) | 2027-05-15 → 2027-01-17 (-118d) |  |  |  |
| 3 | **Excavation** | 2027-01-18 → 2026-09-28 (-112d) | 2027-03-08 → 2026-11-15 (-113d) |  |  |  |
| SDR-2-CON-PW-ZA-3950 | Excavation for Valve Chambers Section 1 | 2027-01-18 → 2026-09-28 (-112d) | 2027-02-10 → 2026-10-21 (-112d) |  | 3d → 89d |  |
| SDR-2-CON-PW-ZA-3680 | Excavation for Valve Chambers Section 2 | 2027-02-11 → 2026-10-22 (-112d) | 2027-03-08 → 2026-11-15 (-113d) |  | 3d → 89d |  |
| 1 | **bedding Works** | 2027-03-14 → 2026-11-16 (-118d) | 2027-04-03 → 2026-12-06 (-118d) |  |  |  |
| SDR-2-CON-PW-ZA-3660 | Sand bedding for Valve Chambers | 2027-03-14 → 2026-11-16 (-118d) | 2027-04-03 → 2026-12-06 (-118d) |  | 3d → 89d |  |
| 4 | **Install Chambers & Valves & Fire Hydrant** | 2027-04-04 → 2026-12-07 (-118d) | 2027-04-21 → 2026-12-24 (-118d) |  |  |  |
| SDR-2-CON-PW-ZA-3690 | Install Chambers & Valves | 2027-04-04 → 2026-12-07 (-118d) | 2027-04-21 → 2026-12-24 (-118d) |  | 3d → 89d |  |
| 2 | **Testing** | 2027-04-22 → 2026-12-26 (-117d) | 2027-05-03 → 2027-01-05 (-118d) |  |  |  |
| SDR-2-CON-PW-ZA-3670 | Testing for Chambers & Valves | 2027-04-22 → 2026-12-26 (-117d) | 2027-05-03 → 2027-01-05 (-118d) |  | 3d → 89d |  |
| 6 | **Backfilling** | 2027-05-04 → 2027-01-06 (-118d) | 2027-05-15 → 2027-01-17 (-118d) |  |  |  |
| SDR-2-CON-PW-ZA-3700 | Backfilling for Chambers & Valves | 2027-05-04 → 2027-01-06 (-118d) | 2027-05-15 → 2027-01-17 (-118d) |  | 3d → 89d |  |
| 2 | **PORTABLE WATER IN ( PH2-G-MCE0 )** | 2027-01-19 → 2026-07-07 (-196d) | 2027-05-25 → 2027-04-18 (-37d) |  |  |  |
| 7 | **Pipes Work** | 2027-01-19 → 2026-07-07 (-196d) | 2027-05-24 → 2026-10-21 (-215d) |  |  |  |
| 1 | **Excavation** | 2027-01-19 → 2026-07-07 (-196d) | 2027-03-14 → 2026-08-16 (-210d) |  |  |  |
| SDR-2-CON-PW-ZA-3960 | Excavation for PW HDPE Pipe 225 mm. Section 1 | 2027-01-19 → 2026-07-07 A (-196d) | 2027-02-11 → 2026-07-14 A (-212d) | 0% → 100% | 3d → none | SDR-2-CON-TS-ZA-2400 → SDR-2-CON-TS-ZA-2400 SS |
| SDR-2-CON-PW-ZA-2910 | Excavation for PW HDPE Pipe 225 mm. Section 2 | 2027-02-13 → 2026-07-19 A (-209d) | 2027-03-14 → 2026-08-16 A (-210d) | 0% → 100% | 3d → none |  |
| 3 | **bedding Works** | 2027-03-15 → 2026-08-26 (-201d) | 2027-04-04 → 2026-09-28 (-188d) |  |  |  |
| SDR-2-CON-PW-ZA-2940 | Sand bedding for PW HDPE Pipe 225 mm. | 2027-03-15 → 2026-08-26 A (-201d) | 2027-04-04 → 2026-09-28 (-188d) | 0% → 45% | 3d → 164d |  |
| 2 | **Pipes Laying** | 2027-04-05 → 2026-08-13 (-235d) | 2027-04-25 → 2026-09-28 (-209d) |  |  |  |
| SDR-2-CON-PW-ZA-2920 | Install PW 225 mm HDPE Pipe | 2027-04-05 → 2026-08-13 A (-235d) | 2027-04-25 → 2026-09-28 (-209d) | 0% → 98% | 3d → 164d | SDR-2-CON-PW-ZA-2940 → SDR-2-CON-PW-ZA-2940 FF |
| 5 | **Testing** | 2027-04-26 → 2026-09-29 (-209d) | 2027-05-03 → 2026-10-06 (-209d) |  |  |  |
| SDR-2-CON-PW-ZA-2930 | Testing of PW HDPE Pipe 225 mm. | 2027-04-26 → 2026-09-29 (-209d) | 2027-05-03 → 2026-10-06 (-209d) |  | 3d → 164d |  |
| 4 | **Backfilling** | 2027-05-04 → 2026-10-07 (-209d) | 2027-05-24 → 2026-10-21 (-215d) |  |  |  |
| SDR-2-CON-PW-ZA-2950 | Backfilling of PW HDPE Pipe 225 mm. | 2027-05-04 → 2026-10-07 (-209d) | 2027-05-24 → 2026-10-21 (-215d) |  | 3d → 164d |  |
| 3 | **Valve Chambers & Valves & Fire Hydrant** | 2027-01-19 → 2026-12-19 (-31d) | 2027-05-25 → 2027-04-18 (-37d) |  |  |  |
| 3 | **Excavation** | 2027-01-19 → 2026-12-19 (-31d) | 2027-03-14 → 2027-02-04 (-38d) |  |  |  |
| SDR-2-CON-PW-ZA-3970 | Excavation for Valve Chambers Section 1 | 2027-01-19 → 2026-12-19 (-31d) | 2027-02-11 → 2027-01-11 (-31d) |  | 8d → 28d |  |
| SDR-2-CON-PW-ZA-2980 | Excavation for Valve Chambers Section 2 | 2027-02-13 → 2027-01-12 (-32d) | 2027-03-14 → 2027-02-04 (-38d) |  | 8d → 28d |  |
| 1 | **bedding Works** | 2027-03-15 → 2027-02-06 (-37d) | 2027-04-04 → 2027-02-27 (-36d) |  |  |  |
| SDR-2-CON-PW-ZA-2960 | Sand bedding for Valve Chambers | 2027-03-15 → 2027-02-06 (-37d) | 2027-04-04 → 2027-02-27 (-36d) |  | 8d → 28d |  |
| 4 | **Install Chambers & Valves & Fire Hydrant** | 2027-04-05 → 2027-02-28 (-36d) | 2027-04-24 → 2027-03-23 (-32d) |  |  |  |
| SDR-2-CON-PW-ZA-2990 | Install Chambers & Valves | 2027-04-05 → 2027-02-28 (-36d) | 2027-04-24 → 2027-03-23 (-32d) |  | 8d → 28d |  |
| 2 | **Testing** | 2027-04-25 → 2027-03-24 (-32d) | 2027-05-05 → 2027-04-04 (-31d) |  |  |  |
| SDR-2-CON-PW-ZA-2970 | Testing for Chambers & Valves | 2027-04-25 → 2027-03-24 (-32d) | 2027-05-05 → 2027-04-04 (-31d) |  | 8d → 28d |  |
| 6 | **Backfilling** | 2027-05-06 → 2027-04-05 (-31d) | 2027-05-25 → 2027-04-18 (-37d) |  |  |  |
| SDR-2-CON-PW-ZA-3000 | Backfilling for Chambers & Valves | 2027-05-06 → 2027-04-05 (-31d) | 2027-05-25 → 2027-04-18 (-37d) |  | 8d → 35d |  |
| 3 | **PORTABLE WATER IN ( PH2-G-MCF0 )** | 2027-01-03 → 2026-07-14 (-173d) | 2027-05-10 → 2027-04-06 (-34d) |  |  |  |
| 7 | **Pipes Work** | 2027-01-03 → 2026-07-14 (-173d) | 2027-05-10 → 2026-12-29 (-132d) |  |  |  |
| 1 | **Excavation** | 2027-01-03 → 2026-07-14 (-173d) | 2027-02-20 → 2026-08-09 (-195d) |  |  |  |
| SDR-2-CON-PW-ZA-3980 | Excavation for PW HDPE Pipe 225 mm. Section 1 | 2027-01-03 → 2026-07-14 A (-173d) | 2027-01-26 → 2026-07-20 A (-190d) | 0% → 100% | 13d → none | SDR-2-CON-TE-ZA-3280, SDR-2-CON-TS-ZA-2900 → SDR-2-CON-TS-ZA-2900 SS |
| SDR-2-CON-PW-ZA-3010 | Excavation for PW HDPE Pipe 225 mm. Section 2 | 2027-01-27 → 2026-08-01 A (-179d) | 2027-02-20 → 2026-08-09 A (-195d) | 0% → 100% | 15d → none | SDR-2-CON-SL-ZA-3290, SDR-2-CON-TE-ZA-3640 FS+4d, SDR-2-CON-TE-ZA-3370, SDR-2-CON-PW-ZA-3980 → SDR-2-CON-PW-ZA-3980 |
| 3 | **bedding Works** | 2027-02-21 → 2026-08-10 (-195d) | 2027-03-18 → 2026-11-30 (-108d) |  |  |  |
| SDR-2-CON-PW-ZA-3040 | Sand bedding for PW HDPE Pipe 225 mm. | 2027-02-21 → 2026-08-10 A (-195d) | 2027-03-18 → 2026-11-30 (-108d) | 0% → 90% | 15d → 105d |  |
| 2 | **Pipes Laying** | 2027-03-20 → 2026-08-13 (-219d) | 2027-04-10 → 2026-08-18 (-235d) |  |  |  |
| SDR-2-CON-PW-ZA-3020 | Install PW 225 mm HDPE Pipe | 2027-03-20 → 2026-08-13 A (-219d) | 2027-04-10 → 2026-08-18 A (-235d) | 0% → 100% | 15d → none | SDR-2-CON-PW-ZA-3040 → SDR-2-CON-PW-ZA-3040 SS |
| 5 | **Testing** | 2027-04-11 → 2026-11-30 (-132d) | 2027-04-19 → 2026-12-08 (-132d) |  |  |  |
| SDR-2-CON-PW-ZA-3030 | Testing of PW HDPE Pipe 225 mm. | 2027-04-11 → 2026-11-30 (-132d) | 2027-04-19 → 2026-12-08 (-132d) |  | 15d → 105d |  |
| 4 | **Backfilling** | 2027-04-20 → 2026-12-09 (-132d) | 2027-05-10 → 2026-12-29 (-132d) |  |  |  |
| SDR-2-CON-PW-ZA-3050 | Backfilling of PW HDPE Pipe 225 mm. | 2027-04-20 → 2026-12-09 (-132d) | 2027-05-10 → 2026-12-29 (-132d) |  | 15d → 105d |  |
| 3 | **Valve Chambers & Valves & Fire Hydrant** | 2027-01-03 → 2026-11-30 (-34d) | 2027-05-10 → 2027-04-06 (-34d) |  |  |  |
| 3 | **Excavation** | 2027-01-03 → 2026-11-30 (-34d) | 2027-02-20 → 2027-01-17 (-34d) |  |  |  |
| SDR-2-CON-PW-ZA-3990 | Excavation for Valve Chambers Section 1 | 2027-01-03 → 2026-11-30 (-34d) | 2027-01-26 → 2026-12-23 (-34d) |  | 13d → 26d |  |
| SDR-2-CON-PW-ZA-3080 | Excavation for Valve Chambers Section 2 | 2027-01-27 → 2026-12-24 (-34d) | 2027-02-20 → 2027-01-17 (-34d) |  | 13d → 26d |  |
| 1 | **bedding Works** | 2027-02-21 → 2027-01-18 (-34d) | 2027-03-21 → 2027-02-09 (-40d) |  |  |  |
| SDR-2-CON-PW-ZA-3060 | Sand bedding for Valve Chambers | 2027-02-21 → 2027-01-18 (-34d) | 2027-03-21 → 2027-02-09 (-40d) |  | 13d → 26d |  |
| 4 | **Install Chambers & Valves & Fire Hydrant** | 2027-03-22 → 2027-02-10 (-40d) | 2027-04-12 → 2027-03-04 (-39d) |  |  |  |
| SDR-2-CON-PW-ZA-3090 | Install Chambers & Valves | 2027-03-22 → 2027-02-10 (-40d) | 2027-04-12 → 2027-03-04 (-39d) |  | 13d → 26d |  |
| 2 | **Testing** | 2027-04-13 → 2027-03-06 (-38d) | 2027-04-21 → 2027-03-18 (-34d) |  |  |  |
| SDR-2-CON-PW-ZA-3070 | Testing for Chambers & Valves | 2027-04-13 → 2027-03-06 (-38d) | 2027-04-21 → 2027-03-18 (-34d) |  | 13d → 26d |  |
| 6 | **Backfilling** | 2027-04-22 → 2027-03-20 (-33d) | 2027-05-10 → 2027-04-06 (-34d) |  |  |  |
| SDR-2-CON-PW-ZA-3100 | Backfilling for Chambers & Valves | 2027-04-22 → 2027-03-20 (-33d) | 2027-05-10 → 2027-04-06 (-34d) |  | 13d → 26d |  |
| 4 | **PORTABLE WATER IN ( PH2-G-MCG0 )** | 2027-01-16 → 2026-06-08 (-222d) | 2027-05-22 → 2027-01-20 (-122d) |  |  |  |
| 7 | **Pipes Work** | 2027-01-16 → 2026-06-08 (-222d) | 2027-05-22 → 2026-10-26 (-208d) |  |  |  |

| ID | Task | Start | Finish | Complete | Total float | Predecessors | Other |
| --- | --- | --- | --- | --- | --- | --- | --- |
| 1 | **Excavation** | 2027-01-16 → 2026-06-08 (-222d) | 2027-03-06 → 2026-06-29 (-250d) |  |  |  |  |
| SDR-2-CON-PW-ZA-4000 | Excavation for PW HDPE Pipe 225 mm. Section 1 | 2027-01-16 → 2026-06-08 A (-222d) | 2027-02-08 → 2026-06-18 A (-235d) | 0% → 100% | 9d → none | SDR-2-CON-MV-ZA-1180, SDR-2-CON-TS-ZA-3000 → SDR-2-CON-TS-ZA-3000 SS |  |
| SDR-2-CON-PW-ZA-3110 | Excavation for PW HDPE Pipe 225 mm. Section 2 | 2027-02-09 → 2026-06-15 A (-239d) | 2027-03-06 → 2026-06-29 A (-250d) | 0% → 100% | 9d → none |  |  |
| 3 | **bedding Works** | 2027-03-07 → 2026-08-26 (-193d) | 2027-03-31 → 2026-09-28 (-184d) |  |  |  |  |
| SDR-2-CON-PW-ZA-3140 | Sand bedding for PW HDPE Pipe 225 mm. | 2027-03-07 → 2026-08-26 A (-193d) | 2027-03-31 → 2026-09-28 (-184d) | 0% → 50% | 9d → 160d |  |  |
| 2 | **Pipes Laying** | 2027-04-01 → 2026-08-13 (-231d) | 2027-04-17 → 2026-08-20 (-240d) |  |  |  |  |
| SDR-2-CON-PW-ZA-3120 | Install PW 225 mm HDPE Pipe | 2027-04-01 → 2026-08-13 A (-231d) | 2027-04-17 → 2026-08-20 A (-240d) | 0% → 100% | 9d → none | SDR-2-CON-PW-ZA-3140 → SDR-2-CON-PW-ZA-3140 SS |  |
| 5 | **Testing** | 2027-04-18 → 2026-09-28 (-202d) | 2027-04-26 → 2026-10-06 (-202d) |  |  |  |  |
| SDR-2-CON-PW-ZA-3130 | Testing of PW HDPE Pipe 225 mm. | 2027-04-18 → 2026-09-28 (-202d) | 2027-04-26 → 2026-10-06 (-202d) |  | 9d → 160d |  |  |
| 4 | **Backfilling** | 2027-04-27 → 2026-10-07 (-202d) | 2027-05-22 → 2026-10-26 (-208d) |  |  |  |  |
| SDR-2-CON-PW-ZA-3150 | Backfilling of PW HDPE Pipe 225 mm. | 2027-04-27 → 2026-10-07 (-202d) | 2027-05-22 → 2026-10-26 (-208d) |  | 9d → 160d |  |  |
| 3 | **Valve Chambers & Valves & Fire Hydrant** | 2027-01-16 → 2026-09-28 (-110d) | 2027-05-22 → 2027-01-20 (-122d) |  |  |  |  |
| 3 | **Excavation** | 2027-01-16 → 2026-09-28 (-110d) | 2027-03-06 → 2026-11-15 (-111d) |  |  |  |  |
| SDR-2-CON-PW-ZA-4010 | Excavation for Valve Chambers Section 1 | 2027-01-16 → 2026-09-28 (-110d) | 2027-02-08 → 2026-10-21 (-110d) |  | 9d → 86d |  |  |
| SDR-2-CON-PW-ZA-3180 | Excavation for Valve Chambers Section 2 | 2027-02-09 → 2026-10-22 (-110d) | 2027-03-06 → 2026-11-15 (-111d) |  | 9d → 86d |  |  |
| 1 | **bedding Works** | 2027-03-07 → 2026-11-16 (-111d) | 2027-03-31 → 2026-12-06 (-115d) |  |  |  |  |
| SDR-2-CON-PW-ZA-3160 | Sand bedding for Valve Chambers | 2027-03-07 → 2026-11-16 (-111d) | 2027-03-31 → 2026-12-06 (-115d) |  | 9d → 86d |  |  |
| 4 | **Install Chambers & Valves & Fire Hydrant** | 2027-04-01 → 2026-12-07 (-115d) | 2027-04-17 → 2026-12-22 (-116d) |  |  |  |  |
| SDR-2-CON-PW-ZA-3190 | Install Chambers & Valves | 2027-04-01 → 2026-12-07 (-115d) | 2027-04-17 → 2026-12-22 (-116d) |  | 9d → 86d |  |  |
| 2 | **Testing** | 2027-04-18 → 2026-12-23 (-116d) | 2027-04-26 → 2026-12-31 (-116d) |  |  |  |  |
| SDR-2-CON-PW-ZA-3170 | Testing for Chambers & Valves | 2027-04-18 → 2026-12-23 (-116d) | 2027-04-26 → 2026-12-31 (-116d) |  | 9d → 86d |  |  |
| 6 | **Backfilling** | 2027-04-27 → 2027-01-02 (-115d) | 2027-05-22 → 2027-01-20 (-122d) |  |  |  |  |
| SDR-2-CON-PW-ZA-3200 | Backfilling for Chambers & Valves | 2027-04-27 → 2027-01-02 (-115d) | 2027-05-22 → 2027-01-20 (-122d) |  | 9d → 86d |  |  |
| 5 | **PORTABLE WATER IN ( PH2-G-MCZ0 )** | 2027-01-19 → 2026-07-13 (-190d) | 2027-05-26 → 2027-01-21 (-125d) |  |  |  |  |
| 7 | **Pipes Work** | 2027-01-19 → 2026-07-13 (-190d) | 2027-05-26 → 2026-10-25 (-213d) |  |  |  |  |
| 1 | **Excavation** | 2027-01-19 → 2026-07-13 (-190d) | 2027-03-14 → 2026-08-19 (-207d) |  |  |  |  |
| SDR-2-CON-PW-ZA-4020 | Excavation for PW HDPE Pipes 315 mm Section 1 | 2027-01-19 → 2026-07-13 A (-190d) | 2027-02-11 → 2026-07-20 A (-206d) | 0% → 100% | 5d → none | SDR-2-CON-TS-ZA-2500 FS+2d → SDR-2-CON-TS-ZA-2500 SS |  |
| SDR-2-CON-PW-ZA-2560 | Excavation for PW HDPE Pipes 315 mm Section 2 | 2027-02-13 → 2026-07-21 A (-207d) | 2027-03-14 → 2026-08-19 A (-207d) | 0% → 100% | 5d → none |  |  |
| 8 | **bedding Works** | 2027-03-15 → 2026-08-26 (-201d) | 2027-04-05 → 2026-09-28 (-189d) |  |  |  |  |
| SDR-2-CON-PW-ZA-2640 | Sand bedding for PW HDPE Pipes 315 mm | 2027-03-15 → 2026-08-26 A (-201d) | 2027-04-05 → 2026-09-28 (-189d) | 0% → 50% | 5d → 161d |  |  |
| 2 | **Pipes Laying** | 2027-04-06 → 2026-08-13 (-236d) | 2027-04-24 → 2026-09-28 (-208d) |  |  |  |  |
| SDR-2-CON-PW-ZA-2570 | Install PW 315 mm HDPE Pipe | 2027-04-06 → 2026-08-13 A (-236d) | 2027-04-24 → 2026-09-28 (-208d) | 0% → 95% | 5d → 161d | SDR-2-CON-PW-ZA-2640 → SDR-2-CON-PW-ZA-2640 FF |  |
| 5 | **Testing** | 2027-04-25 → 2026-09-29 (-208d) | 2027-05-01 → 2026-10-05 (-208d) |  |  |  |  |
| SDR-2-CON-PW-ZA-2630 | Testing of PW HDPE Pipe 315 mm. | 2027-04-25 → 2026-09-29 (-208d) | 2027-05-01 → 2026-10-05 (-208d) |  | 5d → 161d |  |  |
| 9 | **Backfilling** | 2027-05-02 → 2026-10-06 (-208d) | 2027-05-26 → 2026-10-25 (-213d) |  |  |  |  |
| SDR-2-CON-PW-ZA-2650 | Backfilling of PW HDPE Pipe 315 mm. | 2027-05-02 → 2026-10-06 (-208d) | 2027-05-26 → 2026-10-25 (-213d) |  | 5d → 161d |  |  |
| 3 | **Valve Chambers & Valves & Fire Hydrant** | 2027-01-19 → 2026-09-28 (-113d) | 2027-05-26 → 2027-01-21 (-125d) |  |  |  |  |
| 3 | **Excavation** | 2027-01-19 → 2026-09-28 (-113d) | 2027-03-14 → 2026-11-15 (-119d) |  |  |  |  |
| SDR-2-CON-PW-ZA-4030 | Excavation for Valve Chambers Section 1 | 2027-01-19 → 2026-09-28 (-113d) | 2027-02-11 → 2026-10-21 (-113d) |  | 5d → 85d |  |  |
| SDR-2-CON-PW-ZA-2600 | Excavation for Valve Chambers Section 2 | 2027-02-13 → 2026-10-22 (-114d) | 2027-03-14 → 2026-11-15 (-119d) |  | 5d → 85d |  |  |
| 1 | **bedding Works** | 2027-03-15 → 2026-11-16 (-119d) | 2027-04-05 → 2026-12-07 (-119d) |  |  |  |  |
| SDR-2-CON-PW-ZA-2580 | Sand bedding for Valve Chambers | 2027-03-15 → 2026-11-16 (-119d) | 2027-04-05 → 2026-12-07 (-119d) |  | 5d → 85d |  |  |
| 4 | **Install Chambers & Valves & Fire Hydrant** | 2027-04-06 → 2026-12-08 (-119d) | 2027-04-24 → 2026-12-26 (-119d) |  |  |  |  |
| SDR-2-CON-PW-ZA-2610 | Install Chambers & Valves | 2027-04-06 → 2026-12-08 (-119d) | 2027-04-24 → 2026-12-26 (-119d) |  | 5d → 85d |  |  |
| 2 | **Testing** | 2027-04-25 → 2026-12-27 (-119d) | 2027-05-01 → 2027-01-02 (-119d) |  |  |  |  |
| SDR-2-CON-PW-ZA-2590 | Testing for Chambers & Valves | 2027-04-25 → 2026-12-27 (-119d) | 2027-05-01 → 2027-01-02 (-119d) |  | 5d → 85d |  |  |
| 6 | **Backfilling** | 2027-05-02 → 2027-01-03 (-119d) | 2027-05-26 → 2027-01-21 (-125d) |  |  |  |  |
| SDR-2-CON-PW-ZA-2620 | Backfilling for Chambers & Valves | 2027-05-02 → 2027-01-03 (-119d) | 2027-05-26 → 2027-01-21 (-125d) |  | 5d → 85d |  |  |
| EW | **Electrical Works** | 2026-07-07 → 2026-07-01 (-6d) | 2027-02-10 → 2027-02-17 (+7d) |  |  |  |  |
| ZA | **ZONE A** | 2026-07-07 → 2026-07-01 (-6d) | 2027-02-10 → 2027-02-17 (+7d) |  |  |  |  |
| 1 | **Street Lighting Network** | 2026-07-07 → 2026-07-01 (-6d) | 2027-02-10 → 2027-02-17 (+7d) |  |  |  |  |
| 16 | **Street Lighting Network IN ( PH2-COL-MC10 )** | 2026-07-07 → 2026-07-20 (+13d) | 2026-11-26 → 2027-02-10 (+76d) |  |  |  |  |
| 10 | **Excavation** | 2026-07-07 → 2026-07-20 (+13d) | 2026-08-26 → 2026-09-28 (+33d) |  |  |  |  |
| SDR-2-CON-SL-ZA-3590 | Excavation for LV Cable Drawpits | 2026-07-07 → 2026-07-20 A (+13d) | 2026-07-30 → 2026-09-28 (+60d) | 0% → 80% | 0d → 7d |  | was named Excavation for LV Cable trench Section 1 |
| SDR-2-CON-SL-ZA-1000 | Excavation for LV Cable Trenches | 2026-08-03 → 2026-08-12 A (+9d) | 2026-08-26 → 2026-09-28 (+33d) | 0% → 20% | 0d → 7d | SDR-2-PRO-DEL-E-1060, SDR-2-CON-SL-ZA-3590 FS+2d → SDR-2-PRO-DEL-E-1060, SDR-2-CON-SL-ZA-3590 FF | was named Excavation for LV Cable trench Section 2 |
| 11 | **Install Footings** | 2026-08-27 → 2026-08-31 (+4d) | 2026-09-20 → 2026-12-06 (+77d) |  |  |  |  |
| SDR-2-CON-SL-ZA-1010 | Install Footings | 2026-08-27 → 2026-08-31 A (+4d) | 2026-09-20 → 2026-12-06 (+77d) | 0% → 30% | 19d → 14d | SDR-2-CON-SL-ZA-1000, SDR-2-PRO-DEL-E-1000, SDR-2-PRO-DEL-E-1010, SDR-2-PRO-DEL-E-1210, SDR-2-PRO-DEL-E-1030, SDR-2-PRO-DEL-E-1020, SDR-2-PRO-DEL-E-1090 FS+12d, SDR-2-PRO-DEL-E-1090 FF, SDR-2-PRO-DEL-E-1070 FS+11d → SDR-2-CON-SL-ZA-1000 FF, SDR-2-PRO-DEL-E-1030 FF, SDR-2-PRO-DEL-E-1020 FF, SDR-2-PRO-DEL-E-1070 FF, SDR-2-PRO-DEL-E-1000, SDR-2-PRO-DEL-E-1010, SDR-2-PRO-DEL-E-1210 |  |
| 12 | **Backfilling** | 2026-09-21 → 2026-12-07 (+77d) | 2026-10-15 → 2026-12-30 (+76d) |  |  |  |  |
| SDR-2-CON-SL-ZA-1110 | Backfilling over LV Cables of Street lighting | 2026-09-21 → 2026-12-07 (+77d) | 2026-10-15 → 2026-12-30 (+76d) |  | 19d → 14d |  |  |
| 13 | **Install pole** | 2026-11-03 → 2027-01-18 (+76d) | 2026-11-26 → 2027-02-10 (+76d) |  |  |  |  |
| SDR-2-CON-SL-ZA-1100 | Install Pole | 2026-11-03 → 2027-01-18 (+76d) | 2026-11-26 → 2027-02-10 (+76d) |  | 19d → 14d |  |  |
| 17 | **Street Lighting Network IN ( PH2-COL-MC20 )** | 2026-07-13 → 2026-07-01 (-12d) | 2026-11-30 → 2026-12-26 (+26d) |  |  |  |  |
| 10 | **Excavation** | 2026-07-13 → 2026-07-01 (-12d) | 2026-08-30 → 2026-09-28 (+29d) |  |  |  |  |
| SDR-2-CON-SL-ZA-3600 | Excavation for LV Cable Drawpits | 2026-07-13 → 2026-07-01 A (-12d) | 2026-08-05 → 2026-09-28 (+54d) | 0% → 70% | 0d → 28d | SDR-2-PRO-DES-E-1010, SDR-2-CON-SL-ZA-3590 SS+5d → SDR-2-PRO-DES-E-1010, SDR-2-CON-SL-ZA-3590 FF | was named Excavation for LV Cable trench Section 1 |
| SDR-2-CON-SL-ZA-2870 | Excavation for LV Cable Trenches | 2026-08-06 → 2026-07-13 A (-24d) | 2026-08-30 → 2026-09-28 (+29d) | 0% → 50% | 16d → 73d | SDR-2-CON-SL-ZA-3600 → SDR-2-CON-SL-ZA-3600 FF | was named Excavation for LV Cable trench Section 2 |
| 11 | **Install Footings** | 2026-08-31 → 2026-09-03 (+3d) | 2026-09-24 → 2026-10-04 (+10d) |  |  |  |  |
| SDR-2-CON-SL-ZA-2880 | Install Footings | 2026-08-31 → 2026-09-03 A (+3d) | 2026-09-24 → 2026-10-04 (+10d) | 0% → 30% | 16d → 68d | SDR-2-CON-SL-ZA-2870, SDR-2-PRO-DES-E-1020 → SDR-2-CON-SL-ZA-2870 FF, SDR-2-PRO-DES-E-1020 FF |  |
| 12 | **Backfilling** | 2026-09-26 → 2026-10-05 (+9d) | 2026-10-19 → 2026-10-28 (+9d) |  |  |  |  |
| SDR-2-CON-SL-ZA-2900 | Backfilling over LV Cables of Street lighting | 2026-09-26 → 2026-10-05 (+9d) | 2026-10-19 → 2026-10-28 (+9d) |  | 16d → 68d |  |  |
| 13 | **Install pole** | 2026-11-07 → 2026-12-02 (+25d) | 2026-11-30 → 2026-12-26 (+26d) |  |  |  |  |

| ID | Task | Start | Finish | Complete | Total float | Predecessors | Other |
| --- | --- | --- | --- | --- | --- | --- | --- |
| SDR-2-CON-SL-ZA-2890 | Install Pole | 2026-11-07 → 2026-12-02 (+25d) | 2026-11-30 → 2026-12-26 (+26d) |  | 16d → 54d |  |  |
| 18 | **Street Lighting Network IN ( PH2-A-MCA0 )** | 2026-07-19 → 2026-08-01 (+13d) | 2026-11-30 → 2026-12-12 (+12d) |  |  |  |  |
| 10 | **Excavation** | 2026-07-19 → 2026-08-01 (+13d) | 2026-09-05 → 2026-09-28 (+23d) |  |  |  |  |
| SDR-2-CON-SL-ZA-3610 | Excavation for LV Cable Drawpits | 2026-07-19 → 2026-08-01 A (+13d) | 2026-08-11 → 2026-09-28 (+48d) | 0% → 65% | 0d → 28d | SDR-2-CON-SL-ZA-3600 SS+5d → SDR-2-CON-SL-ZA-3600 FF | was named Excavation for LV Cable trench Section 1 |
| SDR-2-CON-SL-ZA-1300 | Excavation for LV Cable Trenches | 2026-08-12 A | 2026-09-05 → 2026-09-28 (+23d) | 0% → 50% | 10d → 51d | SDR-2-CON-SL-ZA-3610 → SDR-2-CON-SL-ZA-3610 FF | was named Excavation for LV Cable trench Section 2 |
| 11 | **Install Footings** | 2026-09-06 → 2026-09-03 (-3d) | 2026-09-30 → 2026-10-31 (+31d) |  |  |  |  |
| SDR-2-CON-SL-ZA-1310 | Install Footings | 2026-09-06 → 2026-09-03 A (-3d) | 2026-09-30 → 2026-10-31 (+31d) | 0% → 30% | 10d → 23d | SDR-2-CON-ST-ZA-6290, SDR-2-CON-SL-ZA-1300 → SDR-2-CON-SL-ZA-1300 FF, SDR-2-CON-ST-ZA-6290 FF |  |
| 12 | **Backfilling** | 2026-10-01 → 2026-10-25 (+24d) | 2026-10-25 → 2026-11-17 (+23d) |  |  |  |  |
| SDR-2-CON-SL-ZA-1410 | Backfilling over LV Cables of Street lighting | 2026-10-01 → 2026-10-25 (+24d) | 2026-10-25 → 2026-11-17 (+23d) |  | 10d → 23d | SDR-2-CON-SL-ZA-1310 → SDR-2-CON-SL-ZA-1310 SS |  |
| 13 | **Install pole** | 2026-11-07 → 2026-11-18 (+11d) | 2026-11-30 → 2026-12-12 (+12d) |  |  |  |  |
| SDR-2-CON-SL-ZA-1400 | Install Pole | 2026-11-07 → 2026-11-18 (+11d) | 2026-11-30 → 2026-12-12 (+12d) |  | 10d → 23d | SDR-2-CON-SL-ZA-1410 FS+10d → SDR-2-CON-SL-ZA-1410 |  |
| 19 | **Street Lighting Network IN ( PH2-A-MCB0 )** | 2026-07-25 → 2026-08-04 (+10d) | 2026-12-06 → 2026-11-30 (-6d) |  |  |  |  |
| 10 | **Excavation** | 2026-07-25 → 2026-08-04 (+10d) | 2026-09-10 → 2026-09-28 (+18d) |  |  |  |  |
| SDR-2-CON-SL-ZA-3620 | Excavation for LV Cable Drawpits | 2026-07-25 → 2026-08-04 A (+10d) | 2026-08-17 → 2026-09-28 (+42d) | 0% → 65% | 0d → 28d | SDR-2-CON-SL-ZA-3610 SS+5d → SDR-2-CON-SL-ZA-3610 FF | was named Excavation for LV Cable trench Section 1 |
| SDR-2-CON-SL-ZA-2950 | Excavation for LV Cable Trenches | 2026-08-18 → 2026-08-12 A (-6d) | 2026-09-10 → 2026-09-28 (+18d) | 0% → 50% | 0d → 28d | SDR-2-CON-SL-ZA-3620 → SDR-2-CON-SL-ZA-3620 FF | was named Excavation for LV Cable trench Section 2 |
| 11 | **Install Footings** | 2026-09-12 → 2026-08-31 (-12d) | 2026-10-06 → 2026-09-30 (-6d) |  |  |  |  |
| SDR-2-CON-SL-ZA-2960 | Install Footings | 2026-09-12 → 2026-08-31 A (-12d) | 2026-10-06 → 2026-09-30 (-6d) | 0% → 30% | 16d → 26d | SDR-2-CON-SL-ZA-2950 → SDR-2-CON-SL-ZA-2950 FF |  |
| 12 | **Backfilling** | 2026-10-07 → 2026-10-01 (-6d) | 2026-10-31 → 2026-10-25 (-6d) |  |  |  |  |
| SDR-2-CON-SL-ZA-2980 | Backfilling over LV Cables of Street lighting | 2026-10-07 → 2026-10-01 (-6d) | 2026-10-31 → 2026-10-25 (-6d) |  | 16d → 26d |  |  |
| 13 | **Install pole** | 2026-11-12 → 2026-11-07 (-5d) | 2026-12-06 → 2026-11-30 (-6d) |  |  |  |  |
| SDR-2-CON-SL-ZA-2970 | Install Pole | 2026-11-12 → 2026-11-07 (-5d) | 2026-12-06 → 2026-11-30 (-6d) |  | 16d → 26d |  |  |
| 20 | **Street Lighting Network IN ( PH2-A-MCC0 )** | 2026-07-30 → 2026-07-20 (-10d) | 2026-12-17 → 2026-12-09 (-8d) |  |  |  |  |
| 10 | **Excavation** | 2026-07-30 → 2026-07-20 (-10d) | 2026-09-16 → 2026-09-28 (+12d) |  |  |  |  |
| SDR-2-CON-SL-ZA-3630 | Excavation for LV Cable Drawpits | 2026-07-30 → 2026-07-20 A (-10d) | 2026-08-23 → 2026-09-28 (+36d) | 0% → 75% | 4d → 45d | SDR-2-CON-SL-ZA-3620 SS+5d → SDR-2-CON-SL-ZA-3620 FF | was named Excavation for LV Cable trench Section 1 |
| SDR-2-CON-SL-ZA-2990 | Excavation for LV Cable Trenches | 2026-08-24 → 2026-08-01 A (-23d) | 2026-09-16 → 2026-09-28 (+12d) | 0% → 50% | 9d → 71d | SDR-2-CON-SL-ZA-3630 → SDR-2-CON-SL-ZA-3630 FF | was named Excavation for LV Cable trench Section 2 |
| 11 | **Install Footings** | 2026-09-17 → 2026-09-03 (-14d) | 2026-10-12 → 2026-10-04 (-8d) |  |  |  |  |
| SDR-2-CON-SL-ZA-3000 | Install Footings | 2026-09-17 → 2026-09-03 A (-14d) | 2026-10-12 → 2026-10-04 (-8d) | 0% → 30% | 9d → 66d | SDR-2-CON-SL-ZA-2990 → SDR-2-CON-SL-ZA-2990 FF |  |
| 12 | **Backfilling** | 2026-10-13 → 2026-10-05 (-8d) | 2026-11-05 → 2026-10-28 (-8d) |  |  |  |  |
| SDR-2-CON-SL-ZA-3020 | Backfilling over LV Cables of Street lighting | 2026-10-13 → 2026-10-05 (-8d) | 2026-11-05 → 2026-10-28 (-8d) |  | 9d → 66d |  |  |
| 13 | **Install pole** | 2026-11-24 → 2026-11-16 (-8d) | 2026-12-17 → 2026-12-09 (-8d) |  |  |  |  |
| SDR-2-CON-SL-ZA-3010 | Install Pole | 2026-11-24 → 2026-11-16 (-8d) | 2026-12-17 → 2026-12-09 (-8d) |  | 9d → 66d |  |  |
| 21 | **Street Lighting Network IN ( PH2-A-MCD0 )** | 2026-08-05 → 2026-07-20 (-16d) | 2026-12-23 → 2027-02-17 (+56d) |  |  |  |  |
| 10 | **Excavation** | 2026-08-05 → 2026-07-20 (-16d) | 2026-09-22 → 2026-09-28 (+6d) |  |  |  |  |
| SDR-2-CON-SL-ZA-3640 | Excavation for LV Cable Drawpits | 2026-08-05 → 2026-07-20 A (-16d) | 2026-08-29 → 2026-09-28 (+30d) | 0% → 70% | 4d → 45d | SDR-2-CON-SL-ZA-3630 SS+5d, SDR-2-PRO-DES-E-1000 FS+12d → SDR-2-PRO-DES-E-1000 FS+12d, SDR-2-CON-SL-ZA-3630 FF | was named Excavation for LV Cable trench Section 1 |
| SDR-2-CON-SL-ZA-3030 | Excavation for LV Cable Trenches | 2026-08-30 → 2026-08-01 A (-29d) | 2026-09-22 → 2026-09-28 (+6d) | 0% → 50% | 4d → 92d | SDR-2-CON-SL-ZA-3640 → SDR-2-CON-SL-ZA-3640 FF | was named Excavation for LV Cable trench Section 2 |
| 11 | **Install Footings** | 2026-09-24 → 2026-09-03 (-21d) | 2026-10-18 → 2026-10-04 (-14d) |  |  |  |  |
| SDR-2-CON-SL-ZA-3040 | Install Footings | 2026-09-24 → 2026-09-03 A (-21d) | 2026-10-18 → 2026-10-04 (-14d) | 0% → 40% | 4d → 87d | SDR-2-CON-SL-ZA-3030 → SDR-2-CON-SL-ZA-3030 FF |  |
| 12 | **Backfilling** | 2026-10-19 → 2026-10-05 (-14d) | 2026-11-11 → 2026-10-28 (-14d) |  |  |  |  |
| SDR-2-CON-SL-ZA-3060 | Backfilling over LV Cables of Street lighting | 2026-10-19 → 2026-10-05 (-14d) | 2026-11-11 → 2026-10-28 (-14d) |  | 4d → 87d |  |  |
| 13 | **Install pole** | 2026-11-30 → 2027-01-25 (+56d) | 2026-12-23 → 2027-02-17 (+56d) |  |  |  |  |
| SDR-2-CON-SL-ZA-3050 | Install Pole | 2026-11-30 → 2027-01-25 (+56d) | 2026-12-23 → 2027-02-17 (+56d) |  | 4d → 27d | SDR-2-CON-MV-ZA-1100, SDR-2-CON-SL-ZA-3550, SDR-2-CON-SL-ZA-3520, SDR-2-CON-SL-ZA-3060 FS+15d → SDR-2-CON-MV-ZA-1100, SDR-2-CON-SL-ZA-3550 SS+10d, SDR-2-CON-SL-ZA-3520, SDR-2-CON-SL-ZA-3060 FS+15d |  |
| 22 | **Street Lighting Network IN ( PH2-A-MCE0 )** | 2026-08-11 → 2026-07-02 (-40d) | 2027-01-21 → 2026-12-07 (-45d) |  |  |  |  |
| 10 | **Excavation** | 2026-08-11 → 2026-07-02 (-40d) | 2026-09-29 → 2026-09-28 (-1d) |  |  |  |  |
| SDR-2-CON-SL-ZA-3650 | Excavation for LV Cable Drawpits | 2026-08-11 → 2026-07-02 A (-40d) | 2026-09-03 → 2026-09-28 (+25d) | 0% → 65% | 10d → 45d | SDR-2-PRO-ST-E-1050, SDR-2-PRO-ST-E-1020, SDR-2-CON-SL-ZA-3640 SS+5d → SDR-2-PRO-ST-E-1050, SDR-2-CON-SL-ZA-3640 FF, SDR-2-PRO-ST-E-1020 FF | was named Excavation for LV Cable trench Section 1 |
| SDR-2-CON-SL-ZA-3070 | Excavation for LV Cable Trenches | 2026-09-05 → 2026-07-14 A (-53d) | 2026-09-29 → 2026-09-28 (-1d) | 0% → 50% | 17d → 48d | SDR-2-CON-SL-ZA-3650 → SDR-2-CON-SL-ZA-3650 FF | was named Excavation for LV Cable trench Section 2 |
| 11 | **Install Footings** | 2026-09-30 → 2026-09-03 (-27d) | 2026-10-24 → 2026-10-04 (-20d) |  |  |  |  |
| SDR-2-CON-SL-ZA-3080 | Install Footings | 2026-09-30 → 2026-09-03 A (-27d) | 2026-10-24 → 2026-10-04 (-20d) | 0% → 30% | 17d → 43d | SDR-2-CON-SL-ZA-3070 → SDR-2-CON-SL-ZA-3070 FF |  |
| 12 | **Backfilling** | 2026-10-25 → 2026-10-05 (-20d) | 2026-11-17 → 2026-10-28 (-20d) |  |  |  |  |
| SDR-2-CON-SL-ZA-3100 | Backfilling over LV Cables of Street lighting | 2026-10-25 → 2026-10-05 (-20d) | 2026-11-17 → 2026-10-28 (-20d) |  | 17d → 43d |  |  |
| 13 | **Install pole** | 2026-12-31 → 2026-11-16 (-45d) | 2027-01-21 → 2026-12-07 (-45d) |  |  |  |  |
| SDR-2-CON-SL-ZA-3090 | Install Pole | 2026-12-31 → 2026-11-16 (-45d) | 2027-01-21 → 2026-12-07 (-45d) |  | 4d → 43d |  |  |
| 23 | **Street Lighting Network IN ( PH2-A-MCF0 )** | 2026-08-17 → 2026-07-01 (-47d) | 2027-01-02 → 2026-12-12 (-21d) |  |  |  |  |
| 10 | **Excavation** | 2026-08-17 → 2026-07-01 (-47d) | 2026-10-05 → 2026-10-07 (+2d) |  |  |  |  |
| SDR-2-CON-SL-ZA-3660 | Excavation for LV Cable Drawpits | 2026-08-17 → 2026-07-01 A (-47d) | 2026-09-09 → 2026-10-07 (+28d) | 0% → 65% | 10d → 37d | SDR-2-PRO-ST-E-1040, SDR-2-PRO-ST-E-1030, SDR-2-CON-SL-ZA-3650 SS+5d → SDR-2-CON-SL-ZA-3650 FF, SDR-2-PRO-ST-E-1040 FF, SDR-2-PRO-ST-E-1030 FF | was named Excavation for LV Cable trench Section 1 |
| SDR-2-CON-SL-ZA-3110 | Excavation for LV Cable Trenches | 2026-09-10 → 2026-07-14 A (-58d) | 2026-10-05 → 2026-10-07 (+2d) | 0% → 50% | 19d → 37d | SDR-2-CON-SL-ZA-3660 → SDR-2-CON-SL-ZA-3660 FF | was named Excavation for LV Cable trench Section 2 |
| 11 | **Install Footings** | 2026-10-06 → 2026-08-31 (-36d) | 2026-10-28 → 2026-10-07 (-21d) |  |  |  |  |
| SDR-2-CON-SL-ZA-3120 | Install Footings | 2026-10-06 → 2026-08-31 A (-36d) | 2026-10-28 → 2026-10-07 (-21d) | 0% → 30% | 19d → 37d | SDR-2-CON-SL-ZA-3110 → SDR-2-CON-SL-ZA-3110 FF |  |
| 12 | **Backfilling** | 2026-10-29 → 2026-10-08 (-21d) | 2026-11-21 → 2026-10-31 (-21d) |  |  |  |  |
| SDR-2-CON-SL-ZA-3140 | Backfilling over LV Cables of Street lighting | 2026-10-29 → 2026-10-08 (-21d) | 2026-11-21 → 2026-10-31 (-21d) |  | 19d → 37d |  |  |
| 13 | **Install pole** | 2026-12-09 → 2026-11-18 (-21d) | 2027-01-02 → 2026-12-12 (-21d) |  |  |  |  |
| SDR-2-CON-SL-ZA-3130 | Install Pole | 2026-12-09 → 2026-11-18 (-21d) | 2027-01-02 → 2026-12-12 (-21d) |  | 19d → 37d |  |  |
| 24 | **Street Lighting Network IN ( PH2-A-MCG0 )** | 2026-08-23 → 2026-07-06 (-48d) | 2026-12-27 → 2026-11-30 (-27d) |  |  |  |  |
| 10 | **Excavation** | 2026-08-23 → 2026-07-06 (-48d) | 2026-10-11 → 2026-10-07 (-4d) |  |  |  |  |
| SDR-2-CON-SL-ZA-3670 | Excavation for LV Cable Drawpits | 2026-08-23 → 2026-07-06 A (-48d) | 2026-09-15 → 2026-10-07 (+22d) | 0% → 65% | 10d → 48d | SDR-2-CON-SL-ZA-3660 SS+5d → SDR-2-CON-SL-ZA-3660 FF | was named Excavation for LV Cable trench Section 1 |
| SDR-2-CON-SL-ZA-3150 | Excavation for LV Cable Trenches | 2026-09-16 → 2026-07-16 A (-62d) | 2026-10-11 → 2026-10-07 (-4d) | 0% → 50% | 20d → 49d | SDR-2-CON-SL-ZA-3670 → SDR-2-CON-SL-ZA-3670 FF | was named Excavation for LV Cable trench Section 2 |
| 11 | **Install Footings** | 2026-10-12 → 2026-09-03 (-39d) | 2026-11-03 → 2026-10-07 (-27d) |  |  |  |  |
| SDR-2-CON-SL-ZA-3160 | Install Footings | 2026-10-12 → 2026-09-03 A (-39d) | 2026-11-03 → 2026-10-07 (-27d) | 0% → 30% | 20d → 49d | SDR-2-CON-SL-ZA-3150 → SDR-2-CON-SL-ZA-3150 FF |  |
| 12 | **Backfilling** | 2026-11-04 → 2026-10-08 (-27d) | 2026-11-25 → 2026-10-29 (-27d) |  |  |  |  |
| SDR-2-CON-SL-ZA-3180 | Backfilling over LV Cables of Street lighting | 2026-11-04 → 2026-10-08 (-27d) | 2026-11-25 → 2026-10-29 (-27d) |  | 20d → 49d |  |  |
| 13 | **Install pole** | 2026-12-14 → 2026-11-17 (-27d) | 2026-12-27 → 2026-11-30 (-27d) |  |  |  |  |

| ID | Task | Start | Finish | Complete | Total float | Predecessors | Other |
| --- | --- | --- | --- | --- | --- | --- | --- |
| SDR-2-CON-SL-ZA-3170 | Install Pole | 2026-12-14 → 2026-11-17 (-27d) | 2026-12-27 → 2026-11-30 (-27d) |  | 20d → 49d |  |  |
| 25 | **Street Lighting Network IN ( PH2-A-MCH0 )** | 2026-08-30 → 2026-07-20 (-41d) | 2027-01-09 → 2026-12-06 (-34d) |  |  |  |  |
| 10 | **Excavation** | 2026-08-30 → 2026-07-20 (-41d) | 2026-10-18 → 2026-10-07 (-11d) |  |  |  |  |
| SDR-2-CON-SL-ZA-3680 | Excavation for LV Cable Drawpits | 2026-08-30 → 2026-07-20 A (-41d) | 2026-09-22 → 2026-10-07 (+15d) | 0% → 65% | 10d → 48d | SDR-2-CON-SL-ZA-3670 SS+6d → SDR-2-CON-SL-ZA-3670 FF | was named Excavation for LV Cable trench Section 1 |
| SDR-2-CON-SL-ZA-3190 | Excavation for LV Cable Trenches | 2026-09-24 → 2026-08-01 A (-54d) | 2026-10-18 → 2026-10-07 (-11d) | 0% → 50% | 19d → 48d | SDR-2-CON-SL-ZA-3680 → SDR-2-CON-SL-ZA-3680 FF | was named Excavation for LV Cable trench Section 2 |
| 11 | **Install Footings** | 2026-10-19 → 2026-09-03 (-46d) | 2026-11-10 → 2026-10-07 (-34d) |  |  |  |  |
| SDR-2-CON-SL-ZA-3200 | Install Footings | 2026-10-19 → 2026-09-03 A (-46d) | 2026-11-10 → 2026-10-07 (-34d) | 0% → 30% | 19d → 48d | SDR-2-CON-SL-ZA-3190 → SDR-2-CON-SL-ZA-3190 FF |  |
| 12 | **Backfilling** | 2026-11-11 → 2026-10-08 (-34d) | 2026-12-02 → 2026-10-29 (-34d) |  |  |  |  |
| SDR-2-CON-SL-ZA-3220 | Backfilling over LV Cables of Street lighting | 2026-11-11 → 2026-10-08 (-34d) | 2026-12-02 → 2026-10-29 (-34d) |  | 19d → 48d |  |  |
| 13 | **Install pole** | 2026-12-21 → 2026-11-17 (-34d) | 2027-01-09 → 2026-12-06 (-34d) |  |  |  |  |
| SDR-2-CON-SL-ZA-3210 | Install Pole | 2026-12-21 → 2026-11-17 (-34d) | 2027-01-09 → 2026-12-06 (-34d) |  | 19d → 48d |  |  |
| 27 | **Street Lighting Network IN ( PH2-ART-MC10 )** | 2026-09-06 → 2026-07-20 (-48d) | 2027-02-10 → 2026-12-10 (-62d) |  |  |  |  |
| 10 | **Excavation** | 2026-09-06 → 2026-07-20 (-48d) | 2026-10-25 → 2026-10-07 (-18d) |  |  |  |  |
| SDR-2-CON-SL-ZA-3690 | Excavation for LV Cable Drawpits | 2026-09-06 → 2026-07-20 A (-48d) | 2026-09-30 → 2026-10-07 (+7d) | 0% → 70% | 10d → 51d | SDR-2-CON-SL-ZA-3680 SS+6d → SDR-2-CON-SL-ZA-3680 FF | was named Excavation for LV Cable trench Section 1 |
| SDR-2-CON-SL-ZA-2910 | Excavation for LV Cable Trenches | 2026-10-01 → 2026-08-01 A (-61d) | 2026-10-25 → 2026-10-07 (-18d) | 0% → 50% | 22d → 58d | SDR-2-CON-SL-ZA-3690 → SDR-2-CON-SL-ZA-3690 FF | was named Excavation for LV Cable trench Section 2 |
| 11 | **Install Footings** | 2026-10-26 → 2026-09-03 (-53d) | 2026-11-18 → 2026-10-07 (-42d) |  |  |  |  |
| SDR-2-CON-SL-ZA-2920 | Install Footings | 2026-10-26 → 2026-09-03 A (-53d) | 2026-11-18 → 2026-10-07 (-42d) | 0% → 30% | 22d → 58d | SDR-2-CON-SL-ZA-2910 → SDR-2-CON-SL-ZA-2910 FF |  |
| 12 | **Backfilling** | 2026-11-19 → 2026-10-08 (-42d) | 2026-12-13 → 2026-11-01 (-42d) |  |  |  |  |
| SDR-2-CON-SL-ZA-2940 | Backfilling over LV Cables of Street lighting | 2026-11-19 → 2026-10-08 (-42d) | 2026-12-13 → 2026-11-01 (-42d) |  | 22d → 58d |  |  |
| 13 | **Install pole** | 2027-01-18 → 2026-11-17 (-62d) | 2027-02-10 → 2026-12-10 (-62d) |  |  |  |  |
| SDR-2-CON-SL-ZA-2930 | Install Pole | 2027-01-18 → 2026-11-17 (-62d) | 2027-02-10 → 2026-12-10 (-62d) |  | 19d → 109d |  |  |
| 10 | **Lighting Pole Panels** | 2026-09-12 → 2026-10-08 (+26d) | 2026-12-31 → 2027-01-26 (+26d) |  |  |  |  |
| 1 | **Excavation** | 2026-09-12 → 2026-10-08 (+26d) | 2026-10-06 → 2026-11-01 (+26d) |  |  |  |  |
| SDR-2-CON-SL-ZA-2650 | Street Lighting Panels Excavation | 2026-09-12 → 2026-10-08 (+26d) | 2026-10-06 → 2026-11-01 (+26d) |  | 10d → 50d |  |  |
| 2 | **Install Footings** | 2026-10-07 → 2026-11-02 (+26d) | 2026-10-29 → 2026-11-24 (+26d) |  |  |  |  |
| SDR-2-CON-SL-ZA-2760 | Installation Footings Street Lighting Panels | 2026-10-07 → 2026-11-02 (+26d) | 2026-10-29 → 2026-11-24 (+26d) |  | 23d → 69d |  |  |
| 3 | **Backfilling** | 2026-10-31 → 2026-11-25 (+25d) | 2026-11-19 → 2026-12-15 (+26d) |  |  |  |  |
| SDR-2-CON-SL-ZA-2770 | Street Lighting Panels Backfilling | 2026-10-31 → 2026-11-25 (+25d) | 2026-11-19 → 2026-12-15 (+26d) |  | 23d → 69d |  |  |
| 4 | **Install pole** | 2026-12-08 → 2027-01-03 (+26d) | 2026-12-31 → 2027-01-26 (+26d) |  |  |  |  |
| SDR-2-CON-SL-ZA-2780 | Street Lighting Panels Installation | 2026-12-08 → 2027-01-03 (+26d) | 2026-12-31 → 2027-01-26 (+26d) |  | 23d → 69d |  |  |
| 11 | **Ring Main Unit** | 2026-09-12 → 2026-10-08 (+26d) | 2026-12-02 → 2026-12-28 (+26d) |  |  |  |  |
| 1 | **Leveling** | 2026-09-12 → 2026-10-08 (+26d) | 2026-10-05 → 2026-10-31 (+26d) |  |  |  |  |
| SDR-2-CON-SL-ZA-2660 | Ring Main Unit leveling | 2026-09-12 → 2026-10-08 (+26d) | 2026-10-05 → 2026-10-31 (+26d) |  | 10d → 50d |  |  |
| 2 | **Lean Concrete** | 2026-10-06 → 2026-11-01 (+26d) | 2026-10-28 → 2026-11-23 (+26d) |  |  |  |  |
| SDR-2-CON-SL-ZA-2790 | Ring Main Unit Lean Concrete | 2026-10-06 → 2026-11-01 (+26d) | 2026-10-28 → 2026-11-23 (+26d) |  | 19d → 57d |  |  |
| 3 | **Installation** | 2026-11-10 → 2026-12-06 (+26d) | 2026-12-02 → 2026-12-28 (+26d) |  |  |  |  |
| SDR-2-CON-SL-ZA-2800 | Ring Main Unit installation for Street Lighting | 2026-11-10 → 2026-12-06 (+26d) | 2026-12-02 → 2026-12-28 (+26d) |  | 19d → 57d |  |  |
| 12 | **Feeder Pillars** | 2026-09-12 → 2026-10-25 (+43d) | 2026-12-08 → 2027-01-19 (+42d) |  |  |  |  |
| 1 | **Leveling** | 2026-09-12 → 2026-10-25 (+43d) | 2026-10-05 → 2026-11-16 (+42d) |  |  |  |  |
| SDR-2-CON-SL-ZA-2670 | Feeder Pillars Leveling | 2026-09-12 → 2026-10-25 (+43d) | 2026-10-05 → 2026-11-16 (+42d) |  | 10d → 42d |  |  |
| 2 | **Lean Concrete** | 2026-10-06 → 2026-11-17 (+42d) | 2026-10-28 → 2026-12-09 (+42d) |  |  |  |  |
| SDR-2-CON-SL-ZA-2810 | Feeder Pillars Lean Concrete | 2026-10-06 → 2026-11-17 (+42d) | 2026-10-28 → 2026-12-09 (+42d) |  | 14d → 55d |  |  |
| 3 | **Installation** | 2026-11-16 → 2026-12-28 (+42d) | 2026-12-08 → 2027-01-19 (+42d) |  |  |  |  |
| SDR-2-CON-SL-ZA-2820 | Feeder Pillars Installation | 2026-11-16 → 2026-12-28 (+42d) | 2026-12-08 → 2027-01-19 (+42d) |  | 14d → 55d |  |  |
| 13 | **KWH Frame** | 2026-09-13 → 2026-11-28 (+76d) | 2026-11-22 → 2027-02-04 (+74d) |  |  |  |  |
| 1 | **Leveling** | 2026-09-13 → 2026-11-28 (+76d) | 2026-10-06 → 2026-12-20 (+75d) |  |  |  |  |
| SDR-2-CON-SL-ZA-2680 | KWH meter mounting frame Leveling | 2026-09-13 → 2026-11-28 (+76d) | 2026-10-06 → 2026-12-20 (+75d) |  | 10d → 14d |  |  |
| 2 | **Lean Concrete** | 2026-10-07 → 2026-12-21 (+75d) | 2026-10-29 → 2027-01-12 (+75d) |  |  |  |  |
| SDR-2-CON-SL-ZA-2830 | KWH meter mounting frame Lean Concrete | 2026-10-07 → 2026-12-21 (+75d) | 2026-10-29 → 2027-01-12 (+75d) |  | 20d → 24d |  |  |
| 3 | **Installation** | 2026-10-31 → 2027-01-13 (+74d) | 2026-11-22 → 2027-02-04 (+74d) |  |  |  |  |
| SDR-2-CON-SL-ZA-2840 | KWH meter mounting frame installation | 2026-10-31 → 2027-01-13 (+74d) | 2026-11-22 → 2027-02-04 (+74d) |  | 20d → 24d |  |  |
| 14 | **Street Lighting Sub-station** | 2026-09-14 → 2026-11-29 (+76d) | 2026-11-24 → 2027-02-07 (+75d) |  |  |  |  |
| 1 | **Leveling** | 2026-09-14 → 2026-11-29 (+76d) | 2026-10-07 → 2026-12-21 (+75d) |  |  |  |  |
| SDR-2-CON-SL-ZA-2690 | Unit Substation Leveling | 2026-09-14 → 2026-11-29 (+76d) | 2026-10-07 → 2026-12-21 (+75d) |  | 18d → 14d |  |  |
| 2 | **Lean Concrete** | 2026-10-08 → 2026-12-22 (+75d) | 2026-10-31 → 2027-01-13 (+74d) |  |  |  |  |
| SDR-2-CON-SL-ZA-2850 | Unit Substation Lean Concrete | 2026-10-08 → 2026-12-22 (+75d) | 2026-10-31 → 2027-01-13 (+74d) |  | 18d → 22d |  |  |
| 3 | **Installation** | 2026-11-01 → 2027-01-14 (+74d) | 2026-11-24 → 2027-02-07 (+75d) |  |  |  |  |
| SDR-2-CON-SL-ZA-2860 | Unit Substation Install for Street Lighting | 2026-11-01 → 2027-01-14 (+74d) | 2026-11-24 → 2027-02-07 (+75d) |  | 18d → 22d |  |  |
| 2 | **MV Network** | 2026-08-09 → 2026-07-14 (-26d) | 2026-12-22 → 2026-12-02 (-20d) |  |  |  |  |
| 1 | **LOOP 3** | 2026-08-09 → 2026-07-14 (-26d) | 2026-11-14 → 2026-11-01 (-13d) |  |  |  |  |
| 6 | **Excavation** | 2026-08-09 → 2026-07-14 (-26d) | 2026-09-01 → 2026-09-28 (+27d) |  |  |  |  |
| SDR-2-CON-MV-ZA-1000 | Excavation Works | 2026-08-09 → 2026-07-14 A (-26d) | 2026-09-01 → 2026-09-28 (+27d) | 0% → 70% | 0d → 20d | SDR-2-CON-SL-ZA-1000 SS+5d → SDR-2-CON-SL-ZA-1000 FF |  |
| 7 | **Pipe laying** | 2026-09-02 → 2026-07-25 (-39d) | 2026-09-26 → 2026-09-28 (+2d) |  |  |  |  |
| SDR-2-CON-MV-ZA-1070 | Pipe Laying | 2026-09-02 → 2026-07-25 A (-39d) | 2026-09-26 → 2026-09-28 (+2d) | 0% → 70% | 15d → 33d | SDR-2-CON-MV-ZA-1000 → SDR-2-CON-MV-ZA-1000 FF |  |
| 8 | **Backfilling** | 2026-09-27 → 2026-08-03 (-55d) | 2026-10-20 → 2026-09-28 (-22d) |  |  |  |  |
| SDR-2-CON-MV-ZA-1150 | Backfilling Works | 2026-09-27 → 2026-08-03 A (-55d) | 2026-10-20 → 2026-09-28 (-22d) | 0% → 70% | 15d → 33d | SDR-2-PRO-MAL-E-1000, SDR-2-CON-MV-ZA-1070 → SDR-2-CON-MV-ZA-1070 FF, SDR-2-PRO-MAL-E-1000 |  |
| 9 | **Pulling Cable** | 2026-10-21 → 2026-10-08 (-13d) | 2026-11-14 → 2026-11-01 (-13d) |  |  |  |  |
| SDR-2-CON-MV-ZA-1100 | Pulling Cable | 2026-10-21 → 2026-10-08 (-13d) | 2026-11-14 → 2026-11-01 (-13d) |  | 15d → 25d | SDR-2-PRO-ST-E-1000, SDR-2-CON-MV-ZA-1070, SDR-2-CON-MV-ZA-1150 → SDR-2-PRO-ST-E-1000, SDR-2-CON-MV-ZA-1070, SDR-2-CON-MV-ZA-1150, SDR-2-PRO-ST-E-1010 |  |
| 2 | **LOOP 4** | 2026-08-20 → 2026-07-25 (-26d) | 2026-12-13 → 2026-12-02 (-11d) |  |  |  |  |
| 6 | **Excavation** | 2026-08-20 → 2026-07-25 (-26d) | 2026-09-13 → 2026-09-28 (+15d) |  |  |  |  |

| ID | Task | Start | Finish | Complete | Total float | Predecessors | Other |
| --- | --- | --- | --- | --- | --- | --- | --- |
| SDR-2-CON-MV-ZA-1160 | Excavation Works | 2026-08-20 → 2026-07-25 A (-26d) | 2026-09-13 → 2026-09-28 (+15d) | 0% → 70% | 19d → 31d | SDR-2-CON-MV-ZA-1000 SS+10d → SDR-2-CON-MV-ZA-1000 FF |  |
| 7 | **Pipe laying** | 2026-09-14 → 2026-08-13 (-32d) | 2026-10-08 → 2026-09-28 (-10d) |  |  |  |  |
| SDR-2-CON-MV-ZA-1170 | Pipe Laying | 2026-09-14 → 2026-08-13 A (-32d) | 2026-10-08 → 2026-09-28 (-10d) | 0% → 62% | 22d → 31d | SDR-2-CON-MV-ZA-1160 → SDR-2-CON-MV-ZA-1160 FF |  |
| 8 | **Backfilling** | 2026-10-10 → 2026-09-29 (-11d) | 2026-11-02 → 2026-10-22 (-11d) |  |  |  |  |
| SDR-2-CON-MV-ZA-1190 | Backfilling Works | 2026-10-10 → 2026-09-29 (-11d) | 2026-11-02 → 2026-10-22 (-11d) |  | 22d → 31d |  |  |
| 9 | **Pulling Cable** | 2026-11-19 → 2026-11-09 (-10d) | 2026-12-13 → 2026-12-02 (-11d) |  |  |  |  |
| SDR-2-CON-MV-ZA-1180 | Pulling Cable | 2026-11-19 → 2026-11-09 (-10d) | 2026-12-13 → 2026-12-02 (-11d) |  | 22d → 31d |  |  |
| 3 | **LOOP 5** | 2026-08-31 → 2026-08-13 (-18d) | 2026-12-16 → 2026-11-25 (-21d) |  |  |  |  |
| 6 | **Excavation** | 2026-08-31 → 2026-08-13 (-18d) | 2026-09-24 → 2026-09-28 (+4d) |  |  |  |  |
| SDR-2-CON-MV-ZA-1200 | Excavation Works | 2026-08-31 → 2026-08-13 A (-18d) | 2026-09-24 → 2026-09-28 (+4d) | 0% → 50% | 19d → 37d | SDR-2-CON-MV-ZA-1160 SS+9d → SDR-2-CON-MV-ZA-1160 FF |  |
| 7 | **Pipe laying** | 2026-09-26 → 2026-08-13 (-44d) | 2026-10-19 → 2026-09-28 (-21d) |  |  |  |  |
| SDR-2-CON-MV-ZA-1210 | Pipe Laying | 2026-09-26 → 2026-08-13 A (-44d) | 2026-10-19 → 2026-09-28 (-21d) | 0% → 50% | 19d → 37d | SDR-2-CON-MV-ZA-1200 → SDR-2-CON-MV-ZA-1200 FF |  |
| 8 | **Backfilling** | 2026-10-20 → 2026-09-29 (-21d) | 2026-11-12 → 2026-10-22 (-21d) |  |  |  |  |
| SDR-2-CON-MV-ZA-1230 | Backfilling Works | 2026-10-20 → 2026-09-29 (-21d) | 2026-11-12 → 2026-10-22 (-21d) |  | 19d → 37d |  |  |
| 9 | **Pulling Cable** | 2026-11-23 → 2026-11-02 (-21d) | 2026-12-16 → 2026-11-25 (-21d) |  |  |  |  |
| SDR-2-CON-MV-ZA-1220 | Pulling Cable | 2026-11-23 → 2026-11-02 (-21d) | 2026-12-16 → 2026-11-25 (-21d) |  | 19d → 37d |  |  |
| 4 | **LOOP 6** | 2026-09-09 → 2026-08-13 (-27d) | 2026-12-22 → 2026-11-25 (-27d) |  |  |  |  |
| 6 | **Excavation** | 2026-09-09 → 2026-08-13 (-27d) | 2026-10-04 → 2026-09-28 (-6d) |  |  |  |  |
| SDR-2-CON-MV-ZA-1240 | Excavation Works | 2026-09-09 → 2026-08-13 A (-27d) | 2026-10-04 → 2026-09-28 (-6d) | 0% → 50% | 20d → 42d | SDR-2-CON-MV-ZA-1200 SS+8d → SDR-2-CON-MV-ZA-1200 FF |  |
| 7 | **Pipe laying** | 2026-10-05 → 2026-08-13 (-53d) | 2026-10-27 → 2026-09-28 (-29d) |  |  |  |  |
| SDR-2-CON-MV-ZA-1250 | Pipe Laying | 2026-10-05 → 2026-08-13 A (-53d) | 2026-10-27 → 2026-09-28 (-29d) | 0% → 50% | 20d → 42d | SDR-2-CON-MV-ZA-1240 → SDR-2-CON-MV-ZA-1240 FF |  |
| 8 | **Backfilling** | 2026-10-28 → 2026-09-29 (-29d) | 2026-11-21 → 2026-10-22 (-30d) |  |  |  |  |
| SDR-2-CON-MV-ZA-1270 | Backfilling Works | 2026-10-28 → 2026-09-29 (-29d) | 2026-11-21 → 2026-10-22 (-30d) |  | 20d → 42d |  |  |
| 9 | **Pulling Cable** | 2026-11-29 → 2026-11-02 (-27d) | 2026-12-22 → 2026-11-25 (-27d) |  |  |  |  |
| SDR-2-CON-MV-ZA-1260 | Pulling Cable | 2026-11-29 → 2026-11-02 (-27d) | 2026-12-22 → 2026-11-25 (-27d) |  | 20d → 40d |  |  |
| 3 | **TELECOMMUNICATIONS Works** | 2026-08-27 → 2026-07-09 (-49d) | 2027-01-21 → 2027-01-30 (+9d) |  |  |  |  |
| 1 | **TELECOMMUNICATION IN ( PH2-COL-MC10 )** | 2026-08-27 → 2026-09-01 (+5d) | 2027-01-03 → 2027-01-25 (+22d) |  |  |  |  |
| 3 | **Ducts** | 2026-08-27 → 2026-09-13 (+17d) | 2027-01-03 → 2027-01-25 (+22d) |  |  |  |  |
| 2 | **Excavation** | 2026-08-27 → 2026-09-13 (+17d) | 2026-10-15 → 2026-11-07 (+23d) |  |  |  |  |
| SDR-2-CON-TE-ZA-4560 | Excavation for telecom crossing ducts | 2026-08-27 → 2026-09-13 A (+17d) | 2026-09-20 → 2026-10-13 (+23d) | 0% → 50% | 14d → 1d | SDR-2-CON-SL-ZA-1000 → SDR-2-CON-SL-ZA-1000 FF | was named Excavation for telecom trench Section 1 |
| SDR-2-CON-TE-ZA-1000 | Excavation for telecom trenches | 2026-09-21 → 2026-10-14 (+23d) | 2026-10-15 → 2026-11-07 (+23d) |  | 14d → 1d |  | was named Excavation for telecom trench Section 2 |
| 5 | **Pipe laying** | 2026-10-17 → 2026-11-08 (+22d) | 2026-11-07 → 2026-11-29 (+22d) |  |  |  |  |
| SDR-2-CON-TE-ZA-1010 | HDPE Pipes for Telecom Installation | 2026-10-17 → 2026-11-08 (+22d) | 2026-11-07 → 2026-11-29 (+22d) |  | 14d → 1d |  |  |
| 6 | **Backfilling** | 2026-11-08 → 2026-11-30 (+22d) | 2026-11-28 → 2026-12-20 (+22d) |  |  |  |  |
| SDR-2-CON-TE-ZA-1020 | Backfilling over HDPE Telecom Pipes | 2026-11-08 → 2026-11-30 (+22d) | 2026-11-28 → 2026-12-20 (+22d) |  | 14d → 1d |  |  |
| 7 | **Pulling Cable** | 2026-12-10 → 2027-01-02 (+23d) | 2027-01-03 → 2027-01-25 (+22d) |  |  |  |  |
| SDR-2-CON-TE-ZA-1840 | Pulling Cable | 2026-12-10 → 2027-01-02 (+23d) | 2027-01-03 → 2027-01-25 (+22d) |  | 14d → 1d |  |  |
| 4 | **Manholes** | 2026-08-27 → 2026-09-01 (+5d) | 2026-12-28 → 2026-12-29 (+1d) |  |  |  |  |
| 1 | **Excavation** | 2026-08-27 → 2026-09-01 (+5d) | 2026-09-20 → 2026-09-24 (+4d) |  |  |  |  |
| SDR-2-CON-TE-ZA-1030 | Excavation for Telecom Manholes | 2026-08-27 → 2026-09-01 A (+5d) | 2026-09-20 → 2026-09-24 A (+4d) | 0% → 100% | 22d → none | SDR-2-CON-TE-ZA-4560 SS → SDR-2-CON-TE-ZA-4560 FF | was named Excavation for Telecom Manhole |
| 2 | **Bedding Work** | 2026-09-21 → 2026-09-15 (-6d) | 2026-10-13 → 2026-10-14 (+1d) |  |  |  |  |
| SDR-2-CON-TE-ZA-1850 | Sand bedding for Telecom Manhole | 2026-09-21 → 2026-09-15 A (-6d) | 2026-10-13 → 2026-10-14 (+1d) | 0% → 25% | 22d → 11.74d | SDR-2-CON-TE-ZA-1030 → SDR-2-CON-TE-ZA-1030 FF |  |
| 3 | **Install Manholes** |  | 2026-11-05 → 2026-11-07 (+2d) |  |  |  |  |
| SDR-2-CON-TE-ZA-1040 | Installation of Telecom Manhole |  | 2026-11-05 → 2026-11-07 (+2d) |  | 22d → 11.74d |  |  |
| 4 | **Testting** |  | 2026-11-22 → 2026-11-23 (+1d) |  |  |  |  |
| SDR-2-CON-TE-ZA-1050 | Telecom Manhole finishing works |  | 2026-11-22 → 2026-11-23 (+1d) |  | 22d → 11.74d |  |  |
| 5 | **Backfilling** |  | 2026-12-28 → 2026-12-29 (+1d) |  |  |  |  |
| SDR-2-CON-TE-ZA-1060 | Backfilling over Telecom Manhole |  | 2026-12-28 → 2026-12-29 (+1d) |  | 22d → 11.74d |  |  |
| 2 | **TELECOMMUNICATION IN ( PH2-COL-MC20 )** | 2026-09-02 → 2026-07-14 (-50d) | 2027-01-04 → 2026-11-25 (-40d) |  |  |  |  |
| 3 | **Ducts** | 2026-09-02 → 2026-07-14 (-50d) | 2026-12-07 → 2026-10-22 (-46d) |  |  |  |  |
| 2 | **Excavation** | 2026-09-02 → 2026-07-14 (-50d) | 2026-09-27 → 2026-09-28 (+1d) |  |  |  |  |
| SDR-2-CON-TE-ZA-3210 | Excavation for telecom crossing ducts & trenches | 2026-09-02 → 2026-07-14 A (-50d) | 2026-09-27 → 2026-09-28 (+1d) | 0% → 75% | 4d → 7d | SDR-2-CON-SL-ZA-1000 FS+5d → SDR-2-CON-SL-ZA-1000 FF | was named Excavation for telecom trench |
| 5 | **Pipe laying** | 2026-09-28 → 2026-07-21 (-69d) | 2026-10-20 → 2026-09-28 (-22d) |  |  |  |  |
| SDR-2-CON-TE-ZA-3220 | HDPE Pipes for Telecom Installation | 2026-09-28 → 2026-07-21 A (-69d) | 2026-10-20 → 2026-09-28 (-22d) | 0% → 70% | 15d → 114d | SDR-2-CON-TE-ZA-3210 → SDR-2-CON-TE-ZA-3210 FF |  |
| 6 | **Backfilling** | 2026-10-21 → 2026-08-01 (-81d) | 2026-11-12 → 2026-09-28 (-45d) |  |  |  |  |
| SDR-2-CON-TE-ZA-3230 | Backfilling over HDPE Telecom Pipes | 2026-10-21 → 2026-08-01 A (-81d) | 2026-11-12 → 2026-09-28 (-45d) | 0% → 70% | 15d → 114d | SDR-2-CON-TE-ZA-3220 → SDR-2-CON-TE-ZA-3220 FF |  |
| 7 | **Pulling Cable** | 2026-11-14 → 2026-09-29 (-46d) | 2026-12-07 → 2026-10-22 (-46d) |  |  |  |  |
| SDR-2-CON-TE-ZA-3280 | Pulling Cable | 2026-11-14 → 2026-09-29 (-46d) | 2026-12-07 → 2026-10-22 (-46d) |  | 15d → 114d |  |  |
| 4 | **Manholes** | 2026-09-02 → 2026-09-03 (+1d) | 2027-01-04 → 2026-11-25 (-40d) |  |  |  |  |
| 1 | **Excavation** | 2026-09-02 → 2026-09-03 (+1d) | 2026-09-27 → 2026-10-04 (+7d) |  |  |  |  |
| SDR-2-CON-TE-ZA-3240 | Excavation for Telecom Manholes | 2026-09-02 → 2026-09-03 A (+1d) | 2026-09-27 → 2026-10-04 (+7d) | 0% → 95% | 5d → 29d | SDR-2-CON-TE-ZA-3210 SS → SDR-2-CON-TE-ZA-3210 FF | was named Excavation for Telecom Manhole |
| 2 | **Bedding Work** | 2026-09-28 → 2026-09-05 (-23d) | 2026-10-20 → 2026-10-04 (-16d) |  |  |  |  |
| SDR-2-CON-TE-ZA-3290 | Sand bedding for Telecom Manhole | 2026-09-28 → 2026-09-05 A (-23d) | 2026-10-20 → 2026-10-04 (-16d) | 0% → 25% | 5d → 29d | SDR-2-CON-TE-ZA-3240 → SDR-2-CON-TE-ZA-3240 FF |  |
| 3 | **Install Manholes** | 2026-10-21 → 2026-09-03 (-48d) | 2026-11-12 → 2026-10-04 (-39d) |  |  |  |  |
| SDR-2-CON-TE-ZA-3250 | Installation of Telecom Manhole | 2026-10-21 → 2026-09-03 A (-48d) | 2026-11-12 → 2026-10-04 (-39d) | 0% → 55% | 5d → 29d | SDR-2-CON-TE-ZA-3240, SDR-2-CON-TE-ZA-3290 → SDR-2-CON-TE-ZA-3240 FF, SDR-2-CON-TE-ZA-3290 FF |  |
| 4 | **Testting** | 2026-11-14 → 2026-10-05 (-40d) | 2026-11-29 → 2026-10-20 (-40d) |  |  |  |  |
| SDR-2-CON-TE-ZA-3260 | Telecom Manhole finishing works | 2026-11-14 → 2026-10-05 (-40d) | 2026-11-29 → 2026-10-20 (-40d) |  | 5d → 29d |  |  |
| 5 | **Backfilling** | 2026-12-12 → 2026-11-02 (-40d) | 2027-01-04 → 2026-11-25 (-40d) |  |  |  |  |
| SDR-2-CON-TE-ZA-3270 | Backfilling over Telecom Manhole | 2026-12-12 → 2026-11-02 (-40d) | 2027-01-04 → 2026-11-25 (-40d) |  | 5d → 29d |  |  |
| 11 | **TELECOMMUNICATION IN ( PH2-A-MCA0 )** | 2026-09-06 → 2026-08-01 (-36d) | 2027-01-13 → 2027-01-21 (+8d) |  |  |  |  |

| ID | Task | Start | Finish | Complete | Total float | Predecessors | Other |
| --- | --- | --- | --- | --- | --- | --- | --- |
| 3 | **Ducts** | 2026-09-06 → 2026-08-01 (-36d) | 2026-12-20 → 2026-12-17 (-3d) |  |  |  |  |
| 2 | **Excavation** | 2026-09-06 → 2026-08-01 (-36d) | 2026-09-30 → 2026-09-28 (-2d) |  |  |  |  |
| SDR-2-CON-TE-ZA-3300 | Excavation for telecom crossing ducts & trenches | 2026-09-06 → 2026-08-01 A (-36d) | 2026-09-30 → 2026-09-28 (-2d) | 0% → 60% | 4d → 7d | SDR-2-CON-TE-ZA-3210 SS+3d, SDR-2-CON-SL-ZA-1000 → SDR-2-CON-SL-ZA-1000 FF, SDR-2-CON-TE-ZA-3210 FF | was named Excavation for telecom trench |
| 5 | **Pipe laying** | 2026-10-01 → 2026-09-29 (-2d) | 2026-10-22 → 2026-10-20 (-2d) |  |  |  |  |
| SDR-2-CON-TE-ZA-3310 | HDPE Pipes for Telecom Installation | 2026-10-01 → 2026-09-29 (-2d) | 2026-10-22 → 2026-10-20 (-2d) |  | 18d → 10d |  |  |
| 6 | **Backfilling** | 2026-10-24 → 2026-10-21 (-3d) | 2026-11-15 → 2026-11-12 (-3d) |  |  |  |  |
| SDR-2-CON-TE-ZA-3320 | Backfilling over HDPE Telecom Pipes | 2026-10-24 → 2026-10-21 (-3d) | 2026-11-15 → 2026-11-12 (-3d) |  | 18d → 10d |  |  |
| 7 | **Pulling Cable** | 2026-11-28 → 2026-11-25 (-3d) | 2026-12-20 → 2026-12-17 (-3d) |  |  |  |  |
| SDR-2-CON-TE-ZA-3370 | Pulling Cable | 2026-11-28 → 2026-11-25 (-3d) | 2026-12-20 → 2026-12-17 (-3d) |  | 18d → 10d |  |  |
| 4 | **Manholes** | 2026-09-06 → 2026-09-07 (+1d) | 2027-01-13 → 2027-01-21 (+8d) |  |  |  |  |
| 1 | **Excavation** | 2026-09-06 → 2026-09-07 (+1d) | 2026-09-30 → 2026-10-08 (+8d) |  |  |  |  |
| SDR-2-CON-TE-ZA-3330 | Excavation for Telecom Manholes | 2026-09-06 → 2026-09-07 A (+1d) | 2026-09-30 → 2026-10-08 (+8d) | 0% → 30% | 14d → 7.81d | SDR-2-CON-TE-ZA-3300 SS → SDR-2-CON-TE-ZA-3300 FF | was named Excavation for Telecom Manhole |
| 2 | **Bedding Work** | 2026-10-01 → 2026-10-08 (+7d) | 2026-10-24 → 2026-11-01 (+8d) |  |  |  |  |
| SDR-2-CON-TE-ZA-3380 | Sand bedding for Telecom Manhole | 2026-10-01 → 2026-10-08 (+7d) | 2026-10-24 → 2026-11-01 (+8d) |  | 14d → 7.81d |  |  |
| 3 | **Install Manholes** | 2026-10-25 → 2026-11-01 (+7d) | 2026-11-16 → 2026-11-24 (+8d) |  |  |  |  |
| SDR-2-CON-TE-ZA-3340 | Installation of Telecom Manhole | 2026-10-25 → 2026-11-01 (+7d) | 2026-11-16 → 2026-11-24 (+8d) |  | 14d → 7.81d |  |  |
| 4 | **Testting** | 2026-11-17 → 2026-11-24 (+7d) | 2026-12-09 → 2026-12-17 (+8d) |  |  |  |  |
| SDR-2-CON-TE-ZA-3350 | Telecom Manhole finishing works | 2026-11-17 → 2026-11-24 (+7d) | 2026-12-09 → 2026-12-17 (+8d) |  | 14d → 7.81d |  |  |
| 5 | **Backfilling** | 2026-12-22 → 2026-12-29 (+7d) | 2027-01-13 → 2027-01-21 (+8d) |  |  |  |  |
| SDR-2-CON-TE-ZA-3360 | Backfilling over Telecom Manhole | 2026-12-22 → 2026-12-29 (+7d) | 2027-01-13 → 2027-01-21 (+8d) |  | 14d → 7.81d |  |  |
| 12 | **TELECOMMUNICATION IN ( PH2-A-MCB0 )** | 2026-09-12 → 2026-08-08 (-35d) | 2027-01-21 → 2027-01-30 (+9d) |  |  |  |  |
| 3 | **Ducts** | 2026-09-12 → 2026-08-08 (-35d) | 2026-12-29 → 2026-12-21 (-8d) |  |  |  |  |
| 2 | **Excavation** | 2026-09-12 → 2026-08-08 (-35d) | 2026-10-06 → 2026-09-28 (-8d) |  |  |  |  |
| SDR-2-CON-TE-ZA-3390 | Excavation for telecom crossing ducts & trenches | 2026-09-12 → 2026-08-08 A (-35d) | 2026-10-06 → 2026-09-28 (-8d) | 0% → 25% | 4d → 7d | SDR-2-CON-TE-ZA-3300 SS+5d, SDR-2-CON-SL-ZA-1000 → SDR-2-CON-SL-ZA-1000 FF, SDR-2-CON-TE-ZA-3300 FF | was named Excavation for telecom trench |
| 5 | **Pipe laying** | 2026-10-07 → 2026-09-29 (-8d) | 2026-10-31 → 2026-10-22 (-9d) |  |  |  |  |
| SDR-2-CON-TE-ZA-3400 | HDPE Pipes for Telecom Installation | 2026-10-07 → 2026-09-29 (-8d) | 2026-10-31 → 2026-10-22 (-9d) |  | 10d → 7d |  |  |
| 6 | **Backfilling** | 2026-11-01 → 2026-10-24 (-8d) | 2026-11-23 → 2026-11-15 (-8d) |  |  |  |  |
| SDR-2-CON-TE-ZA-3410 | Backfilling over HDPE Telecom Pipes | 2026-11-01 → 2026-10-24 (-8d) | 2026-11-23 → 2026-11-15 (-8d) |  | 10d → 7d |  |  |
| 7 | **Pulling Cable** | 2026-12-06 → 2026-11-28 (-8d) | 2026-12-29 → 2026-12-21 (-8d) |  |  |  |  |
| SDR-2-CON-TE-ZA-3460 | Pulling Cable | 2026-12-06 → 2026-11-28 (-8d) | 2026-12-29 → 2026-12-21 (-8d) |  | 10d → 7d |  |  |
| 4 | **Manholes** | 2026-09-12 → 2026-09-13 (+1d) | 2027-01-21 → 2027-01-30 (+9d) |  |  |  |  |
| 1 | **Excavation** | 2026-09-12 → 2026-09-13 (+1d) | 2026-10-06 → 2026-10-14 (+8d) |  |  |  |  |
| SDR-2-CON-TE-ZA-3420 | Excavation for Telecom Manholes | 2026-09-12 → 2026-09-13 A (+1d) | 2026-10-06 → 2026-10-14 (+8d) | 0% → 30% | 7d → 0.81d | SDR-2-CON-TE-ZA-3390 SS → SDR-2-CON-TE-ZA-3390 FF | was named Excavation for Telecom Manhole |
| 2 | **Bedding Work** | 2026-10-07 → 2026-10-14 (+7d) | 2026-10-29 → 2026-11-07 (+9d) |  |  |  |  |
| SDR-2-CON-TE-ZA-3470 | Sand bedding for Telecom Manhole | 2026-10-07 → 2026-10-14 (+7d) | 2026-10-29 → 2026-11-07 (+9d) |  | 7d → 0.81d |  |  |
| 3 | **Install Manholes** | 2026-10-31 → 2026-11-07 (+7d) | 2026-11-22 → 2026-11-30 (+8d) |  |  |  |  |
| SDR-2-CON-TE-ZA-3430 | Installation of Telecom Manhole | 2026-10-31 → 2026-11-07 (+7d) | 2026-11-22 → 2026-11-30 (+8d) |  | 7d → 0.81d |  |  |
| 4 | **Testting** | 2026-11-23 → 2026-11-30 (+7d) | 2026-12-16 → 2026-12-24 (+8d) |  |  |  |  |
| SDR-2-CON-TE-ZA-3440 | Telecom Manhole finishing works | 2026-11-23 → 2026-11-30 (+7d) | 2026-12-16 → 2026-12-24 (+8d) |  | 7d → 0.81d |  |  |
| 5 | **Backfilling** | 2026-12-29 → 2027-01-05 (+7d) | 2027-01-21 → 2027-01-30 (+9d) |  |  |  |  |
| SDR-2-CON-TE-ZA-3450 | Backfilling over Telecom Manhole | 2026-12-29 → 2027-01-05 (+7d) | 2027-01-21 → 2027-01-30 (+9d) |  | 7d → 0.81d |  |  |
| 13 | **TELECOMMUNICATION IN ( PH2-A-MCC0 )** | 2026-09-17 → 2026-07-20 (-59d) | 2027-01-05 → 2026-12-13 (-23d) |  |  |  |  |
| 3 | **Ducts** | 2026-09-17 → 2026-07-20 (-59d) | 2027-01-03 → 2026-12-01 (-33d) |  |  |  |  |
| 2 | **Excavation** | 2026-09-17 → 2026-07-20 (-59d) | 2026-10-12 → 2026-09-28 (-14d) |  |  |  |  |
| SDR-2-CON-TE-ZA-3480 | Excavation for telecom crossing ducts & trenches | 2026-09-17 → 2026-07-20 A (-59d) | 2026-10-12 → 2026-09-28 (-14d) | 0% → 75% | 4d → 14d | SDR-2-CON-TE-ZA-3390 SS+5d, SDR-2-CON-SL-ZA-1000 → SDR-2-CON-SL-ZA-1000 FF, SDR-2-CON-TE-ZA-3390 FF | was named Excavation for telecom trench |
| 5 | **Pipe laying** | 2026-10-13 → 2026-09-03 (-40d) | 2026-11-04 → 2026-10-03 (-32d) |  |  |  |  |
| SDR-2-CON-TE-ZA-3490 | HDPE Pipes for Telecom Installation | 2026-10-13 → 2026-09-03 A (-40d) | 2026-11-04 → 2026-10-03 (-32d) | 0% → 25% | 6d → 24d | SDR-2-CON-TE-ZA-3480 → SDR-2-CON-TE-ZA-3480 FF |  |
| 6 | **Backfilling** | 2026-11-05 → 2026-10-04 (-32d) | 2026-11-28 → 2026-10-26 (-33d) |  |  |  |  |
| SDR-2-CON-TE-ZA-3500 | Backfilling over HDPE Telecom Pipes | 2026-11-05 → 2026-10-04 (-32d) | 2026-11-28 → 2026-10-26 (-33d) |  | 6d → 24d |  |  |
| 7 | **Pulling Cable** | 2026-12-10 → 2026-11-08 (-32d) | 2027-01-03 → 2026-12-01 (-33d) |  |  |  |  |
| SDR-2-CON-TE-ZA-3550 | Pulling Cable | 2026-12-10 → 2026-11-08 (-32d) | 2027-01-03 → 2026-12-01 (-33d) |  | 6d → 24d |  |  |
| 4 | **Manholes** | 2026-09-17 → 2026-09-10 (-7d) | 2027-01-05 → 2026-12-13 (-23d) |  |  |  |  |
| 1 | **Excavation** | 2026-09-17 → 2026-09-10 (-7d) |  |  |  |  |  |
| SDR-2-CON-TE-ZA-3510 | Excavation for Telecom Manholes | 2026-09-17 → 2026-09-10 A (-7d) |  | 0% → 80% | 4d → 14.81d | SDR-2-CON-TE-ZA-3480 SS → SDR-2-CON-TE-ZA-3480 FF | was named Excavation for Telecom Manhole |
| 2 | **Bedding Work** | 2026-10-13 → 2026-09-10 (-33d) | 2026-11-04 → 2026-10-12 (-23d) |  |  |  |  |
| SDR-2-CON-TE-ZA-3560 | Sand bedding for Telecom Manhole | 2026-10-13 → 2026-09-10 A (-33d) | 2026-11-04 → 2026-10-12 (-23d) | 0% → 25% | 4d → 14.81d | SDR-2-CON-TE-ZA-3510 → SDR-2-CON-TE-ZA-3510 FF |  |
| 3 | **Install Manholes** | 2026-11-05 → 2026-10-12 (-24d) | 2026-11-26 → 2026-11-03 (-23d) |  |  |  |  |
| SDR-2-CON-TE-ZA-3520 | Installation of Telecom Manhole | 2026-11-05 → 2026-10-12 (-24d) | 2026-11-26 → 2026-11-03 (-23d) |  | 4d → 14.81d |  |  |
| 4 | **Testting** | 2026-11-28 → 2026-11-03 (-25d) | 2026-12-13 → 2026-11-19 (-24d) |  |  |  |  |
| SDR-2-CON-TE-ZA-3530 | Telecom Manhole finishing works | 2026-11-28 → 2026-11-03 (-25d) | 2026-12-13 → 2026-11-19 (-24d) |  | 4d → 14.81d |  |  |
| 5 | **Backfilling** | 2026-12-14 → 2026-11-19 (-25d) | 2027-01-05 → 2026-12-13 (-23d) |  |  |  |  |
| SDR-2-CON-TE-ZA-3540 | Backfilling over Telecom Manhole | 2026-12-14 → 2026-11-19 (-25d) | 2027-01-05 → 2026-12-13 (-23d) |  | 4d → 14.81d |  |  |
| 14 | **TELECOMMUNICATION IN ( PH2-A-MCD0 )** | 2026-09-24 → 2026-07-20 (-66d) | 2027-01-12 → 2026-12-22 (-21d) |  |  |  |  |
| 3 | **Ducts** | 2026-09-24 → 2026-07-20 (-66d) | 2026-12-26 → 2026-11-17 (-39d) |  |  |  |  |
| 2 | **Excavation** | 2026-09-24 → 2026-07-20 (-66d) | 2026-10-18 → 2026-09-28 (-20d) |  |  |  |  |
| SDR-2-CON-TE-ZA-3570 | Excavation for telecom crossing ducts & trenches | 2026-09-24 → 2026-07-20 A (-66d) | 2026-10-18 → 2026-09-28 (-20d) | 0% → 75% | 5.2d → 14d | SDR-2-CON-TE-ZA-3480 SS+5d, SDR-2-CON-SL-ZA-1000 → SDR-2-CON-SL-ZA-1000 FF, SDR-2-CON-TE-ZA-3480 FF | was named Excavation for telecom trench |
| 5 | **Pipe laying** | 2026-10-19 → 2026-09-03 (-46d) | 2026-11-10 → 2026-10-03 (-38d) |  |  |  |  |
| SDR-2-CON-TE-ZA-3580 | HDPE Pipes for Telecom Installation | 2026-10-19 → 2026-09-03 A (-46d) | 2026-11-10 → 2026-10-03 (-38d) | 0% → 25% | 10d → 129d | SDR-2-CON-TE-ZA-3570 → SDR-2-CON-TE-ZA-3570 FF |  |
| 6 | **Backfilling** | 2026-11-11 → 2026-10-04 (-38d) | 2026-12-01 → 2026-10-24 (-38d) |  |  |  |  |
| SDR-2-CON-TE-ZA-3590 | Backfilling over HDPE Telecom Pipes | 2026-11-11 → 2026-10-04 (-38d) | 2026-12-01 → 2026-10-24 (-38d) |  | 10d → 129d |  |  |

| ID | Task | Start | Finish | Complete | Total float | Predecessors | Other |
| --- | --- | --- | --- | --- | --- | --- | --- |
| 7 | **Pulling Cable** | 2026-12-02 → 2026-10-25 (-38d) | 2026-12-26 → 2026-11-17 (-39d) |  |  |  |  |
| SDR-2-CON-TE-ZA-3640 | Pulling Cable | 2026-12-02 → 2026-10-25 (-38d) | 2026-12-26 → 2026-11-17 (-39d) |  | 10d → 129d |  |  |
| 4 | **Manholes** | 2026-09-24 → 2026-09-10 (-14d) | 2027-01-12 → 2026-12-22 (-21d) |  |  |  |  |
| 1 | **Excavation** | 2026-09-24 → 2026-09-10 (-14d) | 2026-10-18 → 2026-10-12 (-6d) |  |  |  |  |
| SDR-2-CON-TE-ZA-3600 | Excavation for Telecom Manholes | 2026-09-24 → 2026-09-10 A (-14d) | 2026-10-18 → 2026-10-12 (-6d) | 0% → 60% | 16d → 41.81d | SDR-2-CON-TE-ZA-3570 SS → SDR-2-CON-TE-ZA-3570 FF | was named Excavation for Telecom Manhole |
| 2 | **Bedding Work** | 2026-10-19 → 2026-09-15 (-34d) | 2026-11-10 → 2026-10-15 (-26d) |  |  |  |  |
| SDR-2-CON-TE-ZA-3650 | Sand bedding for Telecom Manhole | 2026-10-19 → 2026-09-15 A (-34d) | 2026-11-10 → 2026-10-15 (-26d) | 0% → 25% | 16d → 38.81d | SDR-2-CON-TE-ZA-3600 → SDR-2-CON-TE-ZA-3600 FF |  |
| 3 | **Install Manholes** | 2026-11-11 → 2026-10-15 (-27d) | 2026-12-05 → 2026-11-09 (-26d) |  |  |  |  |
| SDR-2-CON-TE-ZA-3610 | Installation of Telecom Manhole | 2026-11-11 → 2026-10-15 (-27d) | 2026-12-05 → 2026-11-09 (-26d) |  | 16d → 38.81d |  |  |
| 4 | **Testting** | 2026-12-06 → 2026-11-15 (-21d) | 2026-12-19 → 2026-11-28 (-21d) |  |  |  |  |
| SDR-2-CON-TE-ZA-3620 | Telecom Manhole finishing works | 2026-12-06 → 2026-11-15 (-21d) | 2026-12-19 → 2026-11-28 (-21d) |  | 16d → 34d |  |  |
| 5 | **Backfilling** | 2026-12-20 → 2026-11-29 (-21d) | 2027-01-12 → 2026-12-22 (-21d) |  |  |  |  |
| SDR-2-CON-TE-ZA-3630 | Backfilling over Telecom Manhole | 2026-12-20 → 2026-11-29 (-21d) | 2027-01-12 → 2026-12-22 (-21d) |  | 16d → 34d |  |  |
| 5 | **TELECOMMUNICATION IN ( PH2-A-MCE0 )** | 2026-09-29 → 2026-07-14 (-77d) | 2027-01-14 → 2027-01-13 (-1d) |  |  |  |  |
| 3 | **Ducts** | 2026-09-29 → 2026-07-14 (-77d) | 2026-12-30 → 2026-11-16 (-44d) |  |  |  |  |
| 2 | **Excavation** | 2026-09-29 → 2026-07-14 (-77d) | 2026-10-22 → 2026-09-28 (-24d) |  |  |  |  |
| SDR-2-CON-TE-ZA-3660 | Excavation for telecom crossing ducts & trenches | 2026-09-29 → 2026-07-14 A (-77d) | 2026-10-22 → 2026-09-28 (-24d) | 0% → 75% | 5.2d → 14d | SDR-2-CON-TE-ZA-3570 SS+4d, SDR-2-CON-SL-ZA-1000 → SDR-2-CON-SL-ZA-1000 FF, SDR-2-CON-TE-ZA-3570 FF | was named Excavation for telecom trench |
| 5 | **Pipe laying** | 2026-10-24 → 2026-07-21 (-95d) | 2026-11-11 → 2026-09-28 (-44d) |  |  |  |  |
| SDR-2-CON-TE-ZA-3670 | HDPE Pipes for Telecom Installation | 2026-10-24 → 2026-07-21 A (-95d) | 2026-11-11 → 2026-09-28 (-44d) | 0% → 25% | 6d → 130d | SDR-2-CON-TE-ZA-3660 → SDR-2-CON-TE-ZA-3660 FF |  |
| 6 | **Backfilling** | 2026-11-12 → 2026-09-29 (-44d) | 2026-12-06 → 2026-10-22 (-45d) |  |  |  |  |
| SDR-2-CON-TE-ZA-3680 | Backfilling over HDPE Telecom Pipes | 2026-11-12 → 2026-09-29 (-44d) | 2026-12-06 → 2026-10-22 (-45d) |  | 6d → 130d |  |  |
| 7 | **Pulling Cable** | 2026-12-07 → 2026-10-24 (-44d) | 2026-12-30 → 2026-11-16 (-44d) |  |  |  |  |
| SDR-2-CON-TE-ZA-3730 | Pulling Cable | 2026-12-07 → 2026-10-24 (-44d) | 2026-12-30 → 2026-11-16 (-44d) |  | 6d → 130d |  |  |
| 4 | **Manholes** | 2026-09-29 → 2026-09-28 (-1d) | 2027-01-14 → 2027-01-13 (-1d) |  |  |  |  |
| 1 | **Excavation** | 2026-09-29 → 2026-09-28 (-1d) | 2026-10-22 → 2026-10-21 (-1d) |  |  |  |  |
| SDR-2-CON-TE-ZA-3690 | Excavation for Telecom Manholes | 2026-09-29 → 2026-09-28 (-1d) | 2026-10-22 → 2026-10-21 (-1d) |  | 11.2d → 15d |  | was named Excavation for Telecom Manhole |
| 2 | **Bedding Work** | 2026-10-24 → 2026-10-22 (-2d) | 2026-11-15 → 2026-11-14 (-1d) |  |  |  |  |
| SDR-2-CON-TE-ZA-3740 | Sand bedding for Telecom Manhole | 2026-10-24 → 2026-10-22 (-2d) | 2026-11-15 → 2026-11-14 (-1d) |  | 11.2d → 15d |  |  |
| 3 | **Install Manholes** | 2026-11-16 → 2026-11-15 (-1d) | 2026-12-08 → 2026-12-07 (-1d) |  |  |  |  |
| SDR-2-CON-TE-ZA-3700 | Installation of Telecom Manhole | 2026-11-16 → 2026-11-15 (-1d) | 2026-12-08 → 2026-12-07 (-1d) |  | 11.2d → 15d |  |  |
| 4 | **Testting** | 2026-12-09 → 2026-12-08 (-1d) | 2026-12-22 → 2026-12-21 (-1d) |  |  |  |  |
| SDR-2-CON-TE-ZA-3710 | Telecom Manhole finishing works | 2026-12-09 → 2026-12-08 (-1d) | 2026-12-22 → 2026-12-21 (-1d) |  | 11.2d → 15d |  |  |
| 5 | **Backfilling** | 2026-12-23 → 2026-12-22 (-1d) | 2027-01-14 → 2027-01-13 (-1d) |  |  |  |  |
| SDR-2-CON-TE-ZA-3720 | Backfilling over Telecom Manhole | 2026-12-23 → 2026-12-22 (-1d) | 2027-01-14 → 2027-01-13 (-1d) |  | 11.2d → 15d |  |  |
| 6 | **TELECOMMUNICATION IN ( PH2-A-MCF0 )** | 2026-10-03 → 2026-07-14 (-81d) | 2027-01-19 → 2027-01-14 (-5d) |  |  |  |  |
| 3 | **Ducts** | 2026-10-03 → 2026-07-14 (-81d) | 2027-01-05 → 2026-11-15 (-51d) |  |  |  |  |
| 2 | **Excavation** | 2026-10-03 → 2026-07-14 (-81d) | 2026-10-26 → 2026-09-28 (-28d) |  |  |  |  |
| SDR-2-CON-TE-ZA-3750 | Excavation for telecom crossing ducts & trenches | 2026-10-03 → 2026-07-14 A (-81d) | 2026-10-26 → 2026-09-28 (-28d) | 0% → 75% | 5.2d → 14d | SDR-2-CON-TE-ZA-3660 SS+3d, SDR-2-CON-SL-ZA-1000 → SDR-2-CON-SL-ZA-1000 FF, SDR-2-CON-TE-ZA-3660 FF | was named Excavation for telecom trench |
| 5 | **Pipe laying** | 2026-10-27 → 2026-07-21 (-98d) | 2026-11-18 → 2026-09-28 (-51d) |  |  |  |  |
| SDR-2-CON-TE-ZA-3760 | HDPE Pipes for Telecom Installation | 2026-10-27 → 2026-07-21 A (-98d) | 2026-11-18 → 2026-09-28 (-51d) | 0% → 25% | 19.2d → 66d | SDR-2-CON-TE-ZA-3750 → SDR-2-CON-TE-ZA-3750 FF |  |
| 6 | **Backfilling** | 2026-11-19 → 2026-09-29 (-51d) | 2026-12-13 → 2026-10-22 (-52d) |  |  |  |  |
| SDR-2-CON-TE-ZA-3770 | Backfilling over HDPE Telecom Pipes | 2026-11-19 → 2026-09-29 (-51d) | 2026-12-13 → 2026-10-22 (-52d) |  | 19.2d → 66d |  |  |
| 7 | **Pulling Cable** | 2026-12-14 → 2026-10-24 (-51d) | 2027-01-05 → 2026-11-15 (-51d) |  |  |  |  |
| SDR-2-CON-TE-ZA-3820 | Pulling Cable | 2026-12-14 → 2026-10-24 (-51d) | 2027-01-05 → 2026-11-15 (-51d) |  | 19.2d → 66d |  |  |
| 4 | **Manholes** | 2026-10-03 → 2026-09-28 (-5d) | 2027-01-19 → 2027-01-14 (-5d) |  |  |  |  |
| 1 | **Excavation** | 2026-10-03 → 2026-09-28 (-5d) | 2026-10-26 → 2026-10-21 (-5d) |  |  |  |  |
| SDR-2-CON-TE-ZA-3780 | Excavation for Telecom Manholes | 2026-10-03 → 2026-09-28 (-5d) | 2026-10-26 → 2026-10-21 (-5d) |  | 7.2d → 14d |  | was named Excavation for Telecom Manhole |
| 2 | **Bedding Work** | 2026-10-27 → 2026-10-22 (-5d) | 2026-11-18 → 2026-11-14 (-4d) |  |  |  |  |
| SDR-2-CON-TE-ZA-3830 | Sand bedding for Telecom Manhole | 2026-10-27 → 2026-10-22 (-5d) | 2026-11-18 → 2026-11-14 (-4d) |  | 7.2d → 14d |  |  |
| 3 | **Install Manholes** | 2026-11-19 → 2026-11-15 (-4d) | 2026-12-12 → 2026-12-07 (-5d) |  |  |  |  |
| SDR-2-CON-TE-ZA-3790 | Installation of Telecom Manhole | 2026-11-19 → 2026-11-15 (-4d) | 2026-12-12 → 2026-12-07 (-5d) |  | 7.2d → 14d |  |  |
| 4 | **Testting** | 2026-12-13 → 2026-12-08 (-5d) | 2026-12-26 → 2026-12-21 (-5d) |  |  |  |  |
| SDR-2-CON-TE-ZA-3800 | Telecom Manhole finishing works | 2026-12-13 → 2026-12-08 (-5d) | 2026-12-26 → 2026-12-21 (-5d) |  | 7.2d → 14d |  |  |
| 5 | **Backfilling** | 2026-12-27 → 2026-12-22 (-5d) | 2027-01-19 → 2027-01-14 (-5d) |  |  |  |  |
| SDR-2-CON-TE-ZA-3810 | Backfilling over Telecom Manhole | 2026-12-27 → 2026-12-22 (-5d) | 2027-01-19 → 2027-01-14 (-5d) |  | 7.2d → 14d |  |  |
| 7 | **TELECOMMUNICATION IN ( PH2-A-MCG0 )** | 2026-10-06 → 2026-07-14 (-84d) | 2027-01-21 → 2027-01-13 (-8d) |  |  |  |  |
| 3 | **Ducts** | 2026-10-06 → 2026-07-14 (-84d) | 2027-01-19 → 2026-11-25 (-55d) |  |  |  |  |
| 2 | **Excavation** | 2026-10-06 → 2026-07-14 (-84d) | 2026-10-29 → 2026-09-28 (-31d) |  |  |  |  |
| SDR-2-CON-TE-ZA-3840 | Excavation for telecom crossing ducts & trenches | 2026-10-06 → 2026-07-14 A (-84d) | 2026-10-29 → 2026-09-28 (-31d) | 0% → 75% | 5.2d → 15d | SDR-2-CON-TE-ZA-3750 SS+3d, SDR-2-CON-SL-ZA-1000 → SDR-2-CON-SL-ZA-1000 FF, SDR-2-CON-TE-ZA-3750 FF | was named Excavation for telecom trench |
| 5 | **Pipe laying** | 2026-10-31 → 2026-07-21 (-102d) | 2026-11-22 → 2026-09-28 (-55d) |  |  |  |  |
| SDR-2-CON-TE-ZA-3850 | HDPE Pipes for Telecom Installation | 2026-10-31 → 2026-07-21 A (-102d) | 2026-11-22 → 2026-09-28 (-55d) | 0% → 25% | 7.2d → 57d | SDR-2-CON-TE-ZA-3840 → SDR-2-CON-TE-ZA-3840 FF |  |
| 6 | **Backfilling** | 2026-11-23 → 2026-09-29 (-55d) | 2026-12-15 → 2026-10-21 (-55d) |  |  |  |  |
| SDR-2-CON-TE-ZA-3860 | Backfilling over HDPE Telecom Pipes | 2026-11-23 → 2026-09-29 (-55d) | 2026-12-15 → 2026-10-21 (-55d) |  | 7.2d → 57d |  |  |
| 7 | **Pulling Cable** | 2026-12-27 → 2026-11-02 (-55d) | 2027-01-19 → 2026-11-25 (-55d) |  |  |  |  |
| SDR-2-CON-TE-ZA-3910 | Pulling Cable | 2026-12-27 → 2026-11-02 (-55d) | 2027-01-19 → 2026-11-25 (-55d) |  | 7.2d → 57d |  |  |
| 4 | **Manholes** | 2026-10-06 → 2026-09-28 (-8d) | 2027-01-21 → 2027-01-13 (-8d) |  |  |  |  |
| 1 | **Excavation** | 2026-10-06 → 2026-09-28 (-8d) | 2026-10-29 → 2026-10-21 (-8d) |  |  |  |  |
| SDR-2-CON-TE-ZA-3870 | Excavation for Telecom Manholes | 2026-10-06 → 2026-09-28 (-8d) | 2026-10-29 → 2026-10-21 (-8d) |  | 5.2d → 15d |  | was named Excavation for Telecom Manhole |
| 2 | **Bedding Work** | 2026-10-31 → 2026-10-22 (-9d) | 2026-11-22 → 2026-11-14 (-8d) |  |  |  |  |
| SDR-2-CON-TE-ZA-3920 | Sand bedding for Telecom Manhole | 2026-10-31 → 2026-10-22 (-9d) | 2026-11-22 → 2026-11-14 (-8d) |  | 5.2d → 15d |  |  |

| ID | Task | Start | Finish | Complete | Total float | Predecessors | Other |
| --- | --- | --- | --- | --- | --- | --- | --- |
| 3 | **Install Manholes** | 2026-11-23 → 2026-11-15 (-8d) | 2026-12-15 → 2026-12-07 (-8d) |  |  |  |  |
| SDR-2-CON-TE-ZA-3880 | Installation of Telecom Manhole | 2026-11-23 → 2026-11-15 (-8d) | 2026-12-15 → 2026-12-07 (-8d) |  | 5.2d → 15d |  |  |
| 4 | **Testting** | 2026-12-16 → 2026-12-08 (-8d) | 2026-12-29 → 2026-12-21 (-8d) |  |  |  |  |
| SDR-2-CON-TE-ZA-3890 | Telecom Manhole finishing works | 2026-12-16 → 2026-12-08 (-8d) | 2026-12-29 → 2026-12-21 (-8d) |  | 5.2d → 15d |  |  |
| 5 | **Backfilling** | 2026-12-30 → 2026-12-22 (-8d) | 2027-01-21 → 2027-01-13 (-8d) |  |  |  |  |
| SDR-2-CON-TE-ZA-3900 | Backfilling over Telecom Manhole | 2026-12-30 → 2026-12-22 (-8d) | 2027-01-21 → 2027-01-13 (-8d) |  | 5.2d → 15d |  |  |
| 8 | **TELECOMMUNICATION IN ( PH2-A-MCH0 )** | 2026-10-08 → 2026-07-30 (-70d) | 2027-01-21 → 2027-01-11 (-10d) |  |  |  |  |
| 3 | **Ducts** | 2026-10-08 → 2026-07-30 (-70d) | 2027-01-11 → 2026-12-08 (-34d) |  |  |  |  |
| 2 | **Excavation** | 2026-10-08 → 2026-07-30 (-70d) | 2026-11-01 → 2026-09-28 (-34d) |  |  |  |  |
| SDR-2-CON-TE-ZA-3930 | Excavation for telecom crossing ducts & trenches | 2026-10-08 → 2026-07-30 A (-70d) | 2026-11-01 → 2026-09-28 (-34d) | 0% → 80% | 5.2d → 17d | SDR-2-CON-TE-ZA-3840 SS+2d, SDR-2-CON-SL-ZA-1000 → SDR-2-CON-SL-ZA-1000 FF, SDR-2-CON-TE-ZA-3840 FF | was named Excavation for telecom trench |
| 5 | **Pipe laying** | 2026-11-02 → 2026-09-29 (-34d) | 2026-11-24 → 2026-10-21 (-34d) |  |  |  |  |
| SDR-2-CON-TE-ZA-3940 | HDPE Pipes for Telecom Installation | 2026-11-02 → 2026-09-29 (-34d) | 2026-11-24 → 2026-10-21 (-34d) |  | 14.2d → 46d |  |  |
| 6 | **Backfilling** | 2026-11-25 → 2026-10-22 (-34d) | 2026-12-17 → 2026-11-14 (-33d) |  |  |  |  |
| SDR-2-CON-TE-ZA-3950 | Backfilling over HDPE Telecom Pipes | 2026-11-25 → 2026-10-22 (-34d) | 2026-12-17 → 2026-11-14 (-33d) |  | 14.2d → 46d |  |  |
| 7 | **Pulling Cable** | 2026-12-19 → 2026-11-15 (-34d) | 2027-01-11 → 2026-12-08 (-34d) |  |  |  |  |
| SDR-2-CON-TE-ZA-4000 | Pulling Cable | 2026-12-19 → 2026-11-15 (-34d) | 2027-01-11 → 2026-12-08 (-34d) |  | 14.2d → 46d |  |  |
| 4 | **Manholes** | 2026-10-08 → 2026-09-28 (-10d) | 2027-01-21 → 2027-01-11 (-10d) |  |  |  |  |
| 1 | **Excavation** | 2026-10-08 → 2026-09-28 (-10d) | 2026-11-01 → 2026-10-21 (-11d) |  |  |  |  |
| SDR-2-CON-TE-ZA-3960 | Excavation for Telecom Manholes | 2026-10-08 → 2026-09-28 (-10d) | 2026-11-01 → 2026-10-21 (-11d) |  | 5.2d → 17d |  | was named Excavation for Telecom Manhole |
| 2 | **Bedding Work** | 2026-11-02 → 2026-10-22 (-11d) | 2026-11-24 → 2026-11-14 (-10d) |  |  |  |  |
| SDR-2-CON-TE-ZA-4010 | Sand bedding for Telecom Manhole | 2026-11-02 → 2026-10-22 (-11d) | 2026-11-24 → 2026-11-14 (-10d) |  | 5.2d → 17d |  |  |
| 3 | **Install Manholes** | 2026-11-25 → 2026-11-15 (-10d) | 2026-12-17 → 2026-12-07 (-10d) |  |  |  |  |
| SDR-2-CON-TE-ZA-3970 | Installation of Telecom Manhole | 2026-11-25 → 2026-11-15 (-10d) | 2026-12-17 → 2026-12-07 (-10d) |  | 5.2d → 17d |  |  |
| 4 | **Testting** | 2026-12-19 → 2026-12-08 (-11d) | 2026-12-31 → 2026-12-21 (-10d) |  |  |  |  |
| SDR-2-CON-TE-ZA-3980 | Telecom Manhole finishing works | 2026-12-19 → 2026-12-08 (-11d) | 2026-12-31 → 2026-12-21 (-10d) |  | 5.2d → 17d |  |  |
| 5 | **Backfilling** | 2027-01-02 → 2026-12-22 (-11d) | 2027-01-21 → 2027-01-11 (-10d) |  |  |  |  |
| SDR-2-CON-TE-ZA-3990 | Backfilling over Telecom Manhole | 2027-01-02 → 2026-12-22 (-11d) | 2027-01-21 → 2027-01-11 (-10d) |  | 5.2d → 17d |  |  |
| 9 | **TELECOMMUNICATION IN ( PH2-ART-MC00 )** | 2026-10-08 → 2026-07-09 (-91d) | 2027-01-21 → 2027-01-11 (-10d) |  |  |  |  |
| 3 | **Ducts** | 2026-10-08 → 2026-07-09 (-91d) | 2027-01-10 → 2026-12-07 (-34d) |  |  |  |  |
| 2 | **Excavation** | 2026-10-08 → 2026-07-09 (-91d) | 2026-11-01 → 2026-09-28 (-34d) |  |  |  |  |
| SDR-2-CON-TE-ZA-4020 | Excavation for telecom crossing ducts & trenches | 2026-10-08 → 2026-07-09 A (-91d) | 2026-11-01 → 2026-09-28 (-34d) | 0% → 70% | 5.2d → 17d | SDR-2-CON-TE-ZA-3930 SS, SDR-2-CON-SL-ZA-1000 → SDR-2-CON-SL-ZA-1000 FF, SDR-2-CON-TE-ZA-3930 FF | was named Excavation for telecom trench |
| 5 | **Pipe laying** | 2026-11-02 → 2026-09-29 (-34d) | 2026-11-24 → 2026-10-21 (-34d) |  |  |  |  |
| SDR-2-CON-TE-ZA-4030 | HDPE Pipes for Telecom Installation | 2026-11-02 → 2026-09-29 (-34d) | 2026-11-24 → 2026-10-21 (-34d) |  | 15.2d → 47d |  |  |
| 6 | **Backfilling** | 2026-11-25 → 2026-10-22 (-34d) | 2026-12-16 → 2026-11-12 (-34d) |  |  |  |  |
| SDR-2-CON-TE-ZA-4040 | Backfilling over HDPE Telecom Pipes | 2026-11-25 → 2026-10-22 (-34d) | 2026-12-16 → 2026-11-12 (-34d) |  | 15.2d → 47d |  |  |
| 7 | **Pulling Cable** | 2026-12-17 → 2026-11-14 (-33d) | 2027-01-10 → 2026-12-07 (-34d) |  |  |  |  |
| SDR-2-CON-TE-ZA-4090 | Pulling Cable | 2026-12-17 → 2026-11-14 (-33d) | 2027-01-10 → 2026-12-07 (-34d) |  | 15.2d → 47d |  |  |
| 4 | **Manholes** | 2026-10-08 → 2026-09-28 (-10d) | 2027-01-21 → 2027-01-11 (-10d) |  |  |  |  |
| 1 | **Excavation** | 2026-10-08 → 2026-09-28 (-10d) | 2026-11-01 → 2026-10-21 (-11d) |  |  |  |  |
| SDR-2-CON-TE-ZA-4050 | Excavation for Telecom Manholes | 2026-10-08 → 2026-09-28 (-10d) | 2026-11-01 → 2026-10-21 (-11d) |  | 5.2d → 17d |  | was named Excavation for Telecom Manhole |
| 2 | **Bedding Work** | 2026-11-02 → 2026-10-22 (-11d) | 2026-11-24 → 2026-11-14 (-10d) |  |  |  |  |
| SDR-2-CON-TE-ZA-4100 | Sand bedding for Telecom Manhole | 2026-11-02 → 2026-10-22 (-11d) | 2026-11-24 → 2026-11-14 (-10d) |  | 5.2d → 17d |  |  |
| 3 | **Install Manholes** | 2026-11-25 → 2026-11-15 (-10d) | 2026-12-17 → 2026-12-07 (-10d) |  |  |  |  |
| SDR-2-CON-TE-ZA-4060 | Installation of Telecom Manhole | 2026-11-25 → 2026-11-15 (-10d) | 2026-12-17 → 2026-12-07 (-10d) |  | 5.2d → 17d |  |  |
| 4 | **Testting** | 2026-12-19 → 2026-12-08 (-11d) | 2026-12-31 → 2026-12-21 (-10d) |  |  |  |  |
| SDR-2-CON-TE-ZA-4070 | Telecom Manhole finishing works | 2026-12-19 → 2026-12-08 (-11d) | 2026-12-31 → 2026-12-21 (-10d) |  | 5.2d → 17d |  |  |
| 5 | **Backfilling** | 2027-01-02 → 2026-12-22 (-11d) | 2027-01-21 → 2027-01-11 (-10d) |  |  |  |  |
| SDR-2-CON-TE-ZA-4080 | Backfilling over Telecom Manhole | 2027-01-02 → 2026-12-22 (-11d) | 2027-01-21 → 2027-01-11 (-10d) |  | 5.2d → 17d |  |  |
| 10 | **TELECOMMUNICATION IN ( PH2-ART-MC10 )** | 2026-10-08 → 2026-07-14 (-86d) | 2027-01-21 → 2026-11-21 (-61d) |  |  |  |  |
| 3 | **Ducts** | 2026-10-08 → 2026-07-14 (-86d) | 2027-01-11 → 2026-11-15 (-57d) |  |  |  |  |
| 2 | **Excavation** | 2026-10-08 → 2026-07-14 (-86d) | 2026-11-01 → 2026-09-28 (-34d) |  |  |  |  |
| SDR-2-CON-TE-ZA-4110 | Excavation for telecom crossing ducts & trenches | 2026-10-08 → 2026-07-14 A (-86d) | 2026-11-01 → 2026-09-28 (-34d) | 0% → 75% | 5.2d → 66d | SDR-2-CON-TE-ZA-3930 SS, SDR-2-CON-SL-ZA-1000 → SDR-2-CON-SL-ZA-1000 FF, SDR-2-CON-TE-ZA-3930 FF | was named Excavation for telecom trench |
| 5 | **Pipe laying** | 2026-11-02 → 2026-07-21 (-104d) | 2026-11-24 → 2026-09-28 (-57d) |  |  |  |  |
| SDR-2-CON-TE-ZA-4120 | HDPE Pipes for Telecom Installation | 2026-11-02 → 2026-07-21 A (-104d) | 2026-11-24 → 2026-09-28 (-57d) | 0% → 25% | 14.2d → 66d | SDR-2-CON-TE-ZA-4110 → SDR-2-CON-TE-ZA-4110 FF |  |
| 6 | **Backfilling** | 2026-11-25 → 2026-09-29 (-57d) | 2026-12-17 → 2026-10-21 (-57d) |  |  |  |  |
| SDR-2-CON-TE-ZA-4130 | Backfilling over HDPE Telecom Pipes | 2026-11-25 → 2026-09-29 (-57d) | 2026-12-17 → 2026-10-21 (-57d) |  | 14.2d → 66d |  |  |
| 7 | **Pulling Cable** | 2026-12-19 → 2026-10-22 (-58d) | 2027-01-11 → 2026-11-15 (-57d) |  |  |  |  |
| SDR-2-CON-TE-ZA-4180 | Pulling Cable | 2026-12-19 → 2026-10-22 (-58d) | 2027-01-11 → 2026-11-15 (-57d) |  | 14.2d → 66d |  |  |
| 4 | **Manholes** | 2026-10-08 → 2026-09-12 (-26d) | 2027-01-21 → 2026-11-21 (-61d) |  |  |  |  |
| 1 | **Excavation** | 2026-10-08 → 2026-09-12 (-26d) | 2026-11-01 → 2026-10-13 (-19d) |  |  |  |  |
| SDR-2-CON-TE-ZA-4140 | Excavation for Telecom Manholes | 2026-10-08 → 2026-09-12 A (-26d) | 2026-11-01 → 2026-10-13 (-19d) | 0% → 85% | 5.2d → 62.46d | SDR-2-CON-TE-ZA-4110 SS → SDR-2-CON-TE-ZA-4110 FF | was named Excavation for Telecom Manhole |
| 2 | **Bedding Work** | 2026-11-02 → 2026-09-16 (-47d) | 2026-11-22 → 2026-10-14 (-39d) |  |  |  |  |
| SDR-2-CON-TE-ZA-4190 | Sand bedding for Telecom Manhole | 2026-11-02 → 2026-09-16 A (-47d) | 2026-11-22 → 2026-10-14 (-39d) | 0% → 25% | 5.2d → 61.46d | SDR-2-CON-TE-ZA-4140 → SDR-2-CON-TE-ZA-4140 FF |  |
| 3 | **Install Manholes** | 2026-11-23 → 2026-09-13 (-71d) | 2026-12-15 → 2026-10-14 (-62d) |  |  |  |  |
| SDR-2-CON-TE-ZA-4150 | Installation of Telecom Manhole | 2026-11-23 → 2026-09-13 A (-71d) | 2026-12-15 → 2026-10-14 (-62d) | 0% → 50% | 5.2d → 61.46d | SDR-2-CON-TE-ZA-4140, SDR-2-CON-TE-ZA-4190 → SDR-2-CON-TE-ZA-4140 FF, SDR-2-CON-TE-ZA-4190 FF |  |
| 4 | **Testting** | 2026-12-16 → 2026-10-14 (-63d) | 2026-12-28 → 2026-10-27 (-62d) |  |  |  |  |
| SDR-2-CON-TE-ZA-4160 | Telecom Manhole finishing works | 2026-12-16 → 2026-10-14 (-63d) | 2026-12-28 → 2026-10-27 (-62d) |  | 5.2d → 61.46d |  |  |
| 5 | **Backfilling** | 2026-12-29 → 2026-10-27 (-63d) | 2027-01-21 → 2026-11-21 (-61d) |  |  |  |  |
| SDR-2-CON-TE-ZA-4170 | Backfilling over Telecom Manhole | 2026-12-29 → 2026-10-27 (-63d) | 2027-01-21 → 2026-11-21 (-61d) |  | 5.2d → 61.46d |  |  |
| ZG | **ZONE G** | 2026-08-27 → 2026-07-01 (-57d) | 2027-01-20 → 2027-02-16 (+27d) |  |  |  |  |

| ID | Task | Start | Finish | Complete | Total float | Predecessors | Other |
| --- | --- | --- | --- | --- | --- | --- | --- |
| 1 | **Street Lighting Network** | 2026-09-12 → 2026-07-01 (-73d) | 2027-01-20 → 2027-02-16 (+27d) |  |  |  |  |
| 5 | **Street Lighting IN ( PH2-G-MCA0 )** | 2026-09-30 → 2026-08-13 (-48d) | 2027-01-12 → 2026-11-23 (-50d) |  |  |  |  |
| 10 | **Excavation** | 2026-09-30 → 2026-08-13 (-48d) | 2026-10-24 → 2026-09-28 (-26d) |  |  |  |  |
| SDR-2-CON-SL-ZA-3230 | Excavation for LV Cable drawpits & trenches | 2026-09-30 → 2026-08-13 A (-48d) | 2026-10-24 → 2026-09-28 (-26d) | 0% → 75% | 0d → 38d | SDR-2-CON-SL-ZA-1000, SDR-2-CON-SL-ZA-2950 FS+15d, SDR-2-CON-SL-ZA-3590 → SDR-2-CON-SL-ZA-3590 FF, SDR-2-CON-SL-ZA-1000 FF, SDR-2-CON-SL-ZA-2950 FF | was named Excavation for LV Cable trench |
| 11 | **Install Footings** | 2026-10-25 → 2026-08-13 (-73d) | 2026-11-17 → 2026-09-28 (-50d) |  |  |  |  |
| SDR-2-CON-SL-ZA-3240 | Install Footings | 2026-10-25 → 2026-08-13 A (-73d) | 2026-11-17 → 2026-09-28 (-50d) | 0% → 60% | 12d → 55d | SDR-2-CON-SL-ZA-3230 → SDR-2-CON-SL-ZA-3230 FF |  |
| 12 | **Backfilling** | 2026-11-18 → 2026-09-29 (-50d) | 2026-12-10 → 2026-10-21 (-50d) |  |  |  |  |
| SDR-2-CON-SL-ZA-3260 | Backfilling over LV Cables of Street lighting | 2026-11-18 → 2026-09-29 (-50d) | 2026-12-10 → 2026-10-21 (-50d) |  | 12d → 55d |  |  |
| 13 | **Install pole** | 2026-12-20 → 2026-10-31 (-50d) | 2027-01-12 → 2026-11-23 (-50d) |  |  |  |  |
| SDR-2-CON-SL-ZA-3250 | Install Pole | 2026-12-20 → 2026-10-31 (-50d) | 2027-01-12 → 2026-11-23 (-50d) |  | 12d → 55d |  |  |
| 6 | **Street Lighting IN ( PH2-G-MCE0 )** | 2026-09-12 → 2026-07-04 (-70d) | 2026-12-29 → 2026-12-08 (-21d) |  |  |  |  |
| 10 | **Excavation** | 2026-09-12 → 2026-07-04 (-70d) | 2026-10-06 → 2026-09-28 (-8d) |  |  |  |  |
| SDR-2-CON-SL-ZA-3270 | Excavation for LV Cable drawpits & trenches | 2026-09-12 → 2026-07-04 A (-70d) | 2026-10-06 → 2026-09-28 (-8d) | 0% → 75% | 4d → 35d | SDR-2-CON-SL-ZA-2950, SDR-2-CON-SL-ZA-3590 FS+15d → SDR-2-CON-SL-ZA-3590 FF, SDR-2-CON-SL-ZA-2950 FF | was named Excavation for LV Cable trench |
| 11 | **Install Footings** | 2026-10-07 → 2026-08-13 (-55d) | 2026-10-31 → 2026-09-28 (-33d) |  |  |  |  |
| SDR-2-CON-SL-ZA-3280 | Install Footings | 2026-10-07 → 2026-08-13 A (-55d) | 2026-10-31 → 2026-09-28 (-33d) | 0% → 60% | 4d → 35d | SDR-2-CON-SL-ZA-3270 → SDR-2-CON-SL-ZA-3270 FF |  |
| 12 | **Backfilling** | 2026-11-01 → 2026-09-29 (-33d) | 2026-11-23 → 2026-10-21 (-33d) |  |  |  |  |
| SDR-2-CON-SL-ZA-3300 | Backfilling over LV Cables of Street lighting | 2026-11-01 → 2026-09-29 (-33d) | 2026-11-23 → 2026-10-21 (-33d) |  | 4d → 35d |  |  |
| 13 | **Install pole** | 2026-12-06 → 2026-11-15 (-21d) | 2026-12-29 → 2026-12-08 (-21d) |  |  |  |  |
| SDR-2-CON-SL-ZA-3290 | Install Pole | 2026-12-06 → 2026-11-15 (-21d) | 2026-12-29 → 2026-12-08 (-21d) |  | 4d → 25d |  |  |
| 7 | **Street Lighting IN ( PH2-G-MCF0 )** | 2026-09-30 → 2026-07-04 (-88d) | 2027-01-14 → 2026-11-26 (-49d) |  |  |  |  |
| 10 | **Excavation** | 2026-09-30 → 2026-07-04 (-88d) | 2026-10-24 → 2026-09-28 (-26d) |  |  |  |  |
| SDR-2-CON-SL-ZA-3310 | Excavation for LV Cable drawpits & trenches | 2026-09-30 → 2026-07-04 A (-88d) | 2026-10-24 → 2026-09-28 (-26d) | 0% → 75% | 0d → 38d | SDR-2-CON-SL-ZA-3270 SS+3d, SDR-2-CON-SL-ZA-3230 SS → SDR-2-CON-SL-ZA-3230 FF, SDR-2-CON-SL-ZA-3270 FF | was named Excavation for LV Cable trench |
| 11 | **Install Footings** | 2026-10-25 → 2026-08-13 (-73d) | 2026-11-16 → 2026-09-28 (-49d) |  |  |  |  |
| SDR-2-CON-SL-ZA-3320 | Install Footings | 2026-10-25 → 2026-08-13 A (-73d) | 2026-11-16 → 2026-09-28 (-49d) | 0% → 60% | 5d → 50d | SDR-2-CON-SL-ZA-3310 → SDR-2-CON-SL-ZA-3310 FF |  |
| 12 | **Backfilling** | 2026-11-17 → 2026-09-29 (-49d) | 2026-12-09 → 2026-10-21 (-49d) |  |  |  |  |
| SDR-2-CON-SL-ZA-3340 | Backfilling over LV Cables of Street lighting | 2026-11-17 → 2026-09-29 (-49d) | 2026-12-09 → 2026-10-21 (-49d) |  | 5d → 50d |  |  |
| 13 | **Install pole** | 2026-12-22 → 2026-11-03 (-49d) | 2027-01-14 → 2026-11-26 (-49d) |  |  |  |  |
| SDR-2-CON-SL-ZA-3330 | Install Pole | 2026-12-22 → 2026-11-03 (-49d) | 2027-01-14 → 2026-11-26 (-49d) |  | 5d → 50d |  |  |
| 4 | **Street Lighting IN ( PH2-G-MCG0 )** | 2026-09-30 → 2026-07-04 (-88d) | 2027-01-14 → 2026-11-26 (-49d) |  |  |  |  |
| 10 | **Excavation** | 2026-09-30 → 2026-07-04 (-88d) | 2026-10-24 → 2026-09-28 (-26d) |  |  |  |  |
| SDR-2-CON-SL-ZA-3350 | Excavation for LV Cable drawpits & trenches | 2026-09-30 → 2026-07-04 A (-88d) | 2026-10-24 → 2026-09-28 (-26d) | 0% → 76% | 0d → 38d | SDR-2-CON-SL-ZA-3310 SS → SDR-2-CON-SL-ZA-3310 FF | was named Excavation for LV Cable trench |
| 11 | **Install Footings** | 2026-10-25 → 2026-08-13 (-73d) | 2026-11-16 → 2026-09-28 (-49d) |  |  |  |  |
| SDR-2-CON-SL-ZA-3360 | Install Footings | 2026-10-25 → 2026-08-13 A (-73d) | 2026-11-16 → 2026-09-28 (-49d) | 0% → 62% | 5d → 50d | SDR-2-CON-SL-ZA-3350 → SDR-2-CON-SL-ZA-3350 FF |  |
| 12 | **Backfilling** | 2026-11-17 → 2026-09-29 (-49d) | 2026-12-09 → 2026-10-21 (-49d) |  |  |  |  |
| SDR-2-CON-SL-ZA-3380 | Backfilling over LV Cables of Street lighting | 2026-11-17 → 2026-09-29 (-49d) | 2026-12-09 → 2026-10-21 (-49d) |  | 5d → 50d |  |  |
| 13 | **Install pole** | 2026-12-22 → 2026-11-03 (-49d) | 2027-01-14 → 2026-11-26 (-49d) |  |  |  |  |
| SDR-2-CON-SL-ZA-3370 | Install Pole | 2026-12-22 → 2026-11-03 (-49d) | 2027-01-14 → 2026-11-26 (-49d) |  | 5d → 50d |  |  |
| 1 | **Street Lighting IN ( PH2-G-MCZ0 )** | 2026-10-04 → 2026-07-01 (-95d) | 2027-01-20 → 2026-09-28 (-114d) |  |  |  |  |
| 10 | **Excavation** | 2026-10-04 → 2026-07-01 (-95d) | 2026-10-27 → 2026-09-28 (-29d) |  |  |  |  |
| SDR-2-CON-SL-ZA-3390 | Excavation for LV Cable drawpits & trenches | 2026-10-04 → 2026-07-01 A (-95d) | 2026-10-27 → 2026-09-28 (-29d) | 0% → 75% | 0d → 38d | SDR-2-CON-SL-ZA-3350 SS+3d → SDR-2-CON-SL-ZA-3350 FF | was named Excavation for LV Cable trench |
| 11 | **Install Footings** | 2026-10-28 → 2026-08-13 (-76d) | 2026-11-21 → 2026-09-28 (-54d) |  |  |  |  |
| SDR-2-CON-SL-ZA-3400 | Install Footings | 2026-10-28 → 2026-08-13 A (-76d) | 2026-11-21 → 2026-09-28 (-54d) | 0% → 60% | 0d → 101d | SDR-2-CON-SL-ZA-3390 → SDR-2-CON-SL-ZA-3390 FF |  |
| 12 | **Backfilling** | 2026-11-22 → 2026-07-20 (-125d) | 2026-12-15 → 2026-09-28 (-78d) |  |  |  |  |
| SDR-2-CON-SL-ZA-3420 | Backfilling over LV Cables of Street lighting | 2026-11-22 → 2026-07-20 A (-125d) | 2026-12-15 → 2026-09-28 (-78d) | 0% → 50% | 0d → 101d | SDR-2-CON-SL-ZA-3400 → SDR-2-CON-SL-ZA-3400 FF |  |
| 13 | **Install pole** | 2026-12-28 → 2026-07-30 (-151d) | 2027-01-20 → 2026-09-28 (-114d) |  |  |  |  |
| SDR-2-CON-SL-ZA-3410 | Install Pole | 2026-12-28 → 2026-07-30 A (-151d) | 2027-01-20 → 2026-09-28 (-114d) | 0% → 50% | 0d → 101d | SDR-2-CON-SL-ZA-3420 FS+10d → SDR-2-CON-SL-ZA-3420 FF |  |
| 10 | **Lighting Pole Panels** | 2026-10-10 → 2026-09-28 (-12d) | 2027-01-11 → 2026-12-30 (-12d) |  |  |  |  |
| 1 | **Excavation** | 2026-10-10 → 2026-09-28 (-12d) | 2026-11-02 → 2026-10-21 (-12d) |  |  |  |  |
| SDR-2-CON-SL-ZA-3430 | Street Lighting Panels Excavation | 2026-10-10 → 2026-09-28 (-12d) | 2026-11-02 → 2026-10-21 (-12d) |  | 16d → 38d |  |  |
| 2 | **Install Footings** | 2026-11-03 → 2026-10-22 (-12d) | 2026-11-24 → 2026-11-12 (-12d) |  |  |  |  |
| SDR-2-CON-SL-ZA-3440 | Installation Footings Street Lighting Panels | 2026-11-03 → 2026-10-22 (-12d) | 2026-11-24 → 2026-11-12 (-12d) |  | 18d → 92d |  |  |
| 3 | **Backfilling** | 2026-11-25 → 2026-11-14 (-11d) | 2026-12-17 → 2026-12-06 (-11d) |  |  |  |  |
| SDR-2-CON-SL-ZA-3450 | Street Lighting Panels Backfilling | 2026-11-25 → 2026-11-14 (-11d) | 2026-12-17 → 2026-12-06 (-11d) |  | 18d → 92d |  |  |
| 4 | **Install pole** | 2026-12-19 → 2026-12-07 (-12d) | 2027-01-11 → 2026-12-30 (-12d) |  |  |  |  |
| SDR-2-CON-SL-ZA-3460 | Street Lighting Panels Installation | 2026-12-19 → 2026-12-07 (-12d) | 2027-01-11 → 2026-12-30 (-12d) |  | 18d → 92d |  |  |
| 11 | **Ring Main Unit** | 2026-11-03 → 2026-10-22 (-12d) | 2027-01-06 → 2026-12-26 (-11d) |  |  |  |  |
| 1 | **Leveling** | 2026-11-03 → 2026-10-22 (-12d) | 2026-11-25 → 2026-11-14 (-11d) |  |  |  |  |
| SDR-2-CON-SL-ZA-3470 | Ring Main Unit leveling | 2026-11-03 → 2026-10-22 (-12d) | 2026-11-25 → 2026-11-14 (-11d) |  | 16d → 38d |  |  |
| 2 | **Lean Concrete** | 2026-11-26 → 2026-11-15 (-11d) | 2026-12-14 → 2026-12-02 (-12d) |  |  |  |  |
| SDR-2-CON-SL-ZA-3480 | Ring Main Unit Lean Concrete | 2026-11-26 → 2026-11-15 (-11d) | 2026-12-14 → 2026-12-02 (-12d) |  | 16d → 38d |  |  |
| 3 | **Installation** | 2026-12-15 → 2026-12-03 (-12d) | 2027-01-06 → 2026-12-26 (-11d) |  |  |  |  |
| SDR-2-CON-SL-ZA-3490 | Ring Main Unit installation for Street Lighting | 2026-12-15 → 2026-12-03 (-12d) | 2027-01-06 → 2026-12-26 (-11d) |  | 16d → 38d |  |  |
| 12 | **Feeder Pillars** | 2026-09-12 → 2026-10-25 (+43d) | 2026-11-21 → 2027-01-02 (+42d) |  |  |  |  |
| 1 | **Leveling** | 2026-09-12 → 2026-10-25 (+43d) | 2026-10-05 → 2026-11-16 (+42d) |  |  |  |  |
| SDR-2-CON-SL-ZA-3500 | Feeder Pillars Leveling | 2026-09-12 → 2026-10-25 (+43d) | 2026-10-05 → 2026-11-16 (+42d) |  | 11d → 46d |  |  |
| 2 | **Lean Concrete** | 2026-10-06 → 2026-11-17 (+42d) | 2026-10-28 → 2026-12-09 (+42d) |  |  |  |  |
| SDR-2-CON-SL-ZA-3510 | Feeder Pillars Lean Concrete | 2026-10-06 → 2026-11-17 (+42d) | 2026-10-28 → 2026-12-09 (+42d) |  | 11d → 46d |  |  |
| 3 | **Installation** | 2026-10-29 → 2026-12-10 (+42d) | 2026-11-21 → 2027-01-02 (+42d) |  |  |  |  |
| SDR-2-CON-SL-ZA-3520 | Feeder Pillars Installation | 2026-10-29 → 2026-12-10 (+42d) | 2026-11-21 → 2027-01-02 (+42d) |  | 11d → 46d |  |  |
| 13 | **KWH Frame** | 2026-09-13 → 2026-11-28 (+76d) | 2026-11-22 → 2027-02-04 (+74d) |  |  |  |  |

| ID | Task | Start | Finish | Complete | Total float | Predecessors | Other |
| --- | --- | --- | --- | --- | --- | --- | --- |
| 1 | **Leveling** | 2026-09-13 → 2026-11-28 (+76d) | 2026-10-06 → 2026-12-20 (+75d) |  |  |  |  |
| SDR-2-CON-SL-ZA-3530 | KWH meter mounting frame Leveling | 2026-09-13 → 2026-11-28 (+76d) | 2026-10-06 → 2026-12-20 (+75d) |  | 10d → 24d |  |  |
| 2 | **Lean Concrete** | 2026-10-07 → 2026-12-21 (+75d) | 2026-10-29 → 2027-01-12 (+75d) |  |  |  |  |
| SDR-2-CON-SL-ZA-3540 | KWH meter mounting frame Lean Concrete | 2026-10-07 → 2026-12-21 (+75d) | 2026-10-29 → 2027-01-12 (+75d) |  | 10d → 24d |  |  |
| 3 | **Installation** | 2026-10-31 → 2027-01-13 (+74d) | 2026-11-22 → 2027-02-04 (+74d) |  |  |  |  |
| SDR-2-CON-SL-ZA-3550 | KWH meter mounting frame installation | 2026-10-31 → 2027-01-13 (+74d) | 2026-11-22 → 2027-02-04 (+74d) |  | 10d → 24d |  |  |
| 14 | **Street Lighting Sub-station** | 2026-09-14 → 2026-11-29 (+76d) | 2026-12-03 → 2027-02-16 (+75d) |  |  |  |  |
| 1 | **Leveling** | 2026-09-14 → 2026-11-29 (+76d) | 2026-10-07 → 2026-12-21 (+75d) |  |  |  |  |
| SDR-2-CON-SL-ZA-3560 | Unit Substation Leveling | 2026-09-14 → 2026-11-29 (+76d) | 2026-10-07 → 2026-12-21 (+75d) |  | 18d → 14d |  |  |
| 2 | **Lean Concrete** | 2026-10-08 → 2026-12-22 (+75d) | 2026-10-29 → 2027-01-12 (+75d) |  |  |  |  |
| SDR-2-CON-SL-ZA-3570 | Unit Substation Lean Concrete | 2026-10-08 → 2026-12-22 (+75d) | 2026-10-29 → 2027-01-12 (+75d) |  | 18d → 14d |  |  |
| 3 | **Installation** | 2026-11-11 → 2027-01-25 (+75d) | 2026-12-03 → 2027-02-16 (+75d) |  |  |  |  |
| SDR-2-CON-SL-ZA-3580 | Unit Substation Install for Street Lighting | 2026-11-11 → 2027-01-25 (+75d) | 2026-12-03 → 2027-02-16 (+75d) |  | 18d → 14d |  |  |
| 2 | **MV Network** | 2026-08-27 → 2026-07-19 (-39d) | 2026-12-12 → 2026-11-02 (-40d) |  |  |  |  |
| 1 | **LOOP 1** | 2026-08-27 → 2026-07-19 (-39d) | 2026-12-03 → 2026-11-02 (-31d) |  |  |  |  |
| 6 | **Excavation** | 2026-08-27 → 2026-07-19 (-39d) | 2026-09-20 → 2026-09-28 (+8d) |  |  |  |  |
| SDR-2-CON-MV-ZA-1280 | Excavation Works | 2026-08-27 → 2026-07-19 A (-39d) | 2026-09-20 → 2026-09-28 (+8d) | 0% → 50% | 7d → 55d | SDR-2-CON-SL-ZA-1000 → SDR-2-CON-SL-ZA-1000 FF |  |
| 7 | **Pipe laying** | 2026-09-21 → 2026-08-04 (-48d) | 2026-10-15 → 2026-09-28 (-17d) |  |  |  |  |
| SDR-2-CON-MV-ZA-1290 | Pipe Laying | 2026-09-21 → 2026-08-04 A (-48d) | 2026-10-15 → 2026-09-28 (-17d) | 0% → 50% | 7d → 57d | SDR-2-CON-MV-ZA-1280 → SDR-2-CON-MV-ZA-1280 FF |  |
| 8 | **Backfilling** | 2026-10-17 → 2026-08-08 (-70d) | 2026-10-29 → 2026-09-28 (-31d) |  |  |  |  |
| SDR-2-CON-MV-ZA-1310 | Backfilling Works | 2026-10-17 → 2026-08-08 A (-70d) | 2026-10-29 → 2026-09-28 (-31d) | 0% → 25% | 7d → 57d | SDR-2-CON-MV-ZA-1290 → SDR-2-CON-MV-ZA-1290 FF |  |
| 9 | **Pulling Cable** | 2026-11-11 → 2026-10-11 (-31d) | 2026-12-03 → 2026-11-02 (-31d) |  |  |  |  |
| SDR-2-CON-MV-ZA-1300 | Pulling Cable | 2026-11-11 → 2026-10-11 (-31d) | 2026-12-03 → 2026-11-02 (-31d) |  | 7d → 57d |  |  |
| 2 | **LOOP 2** | 2026-08-27 → 2026-08-01 (-26d) | 2026-12-12 → 2026-11-02 (-40d) |  |  |  |  |
| 6 | **Excavation** | 2026-08-27 → 2026-08-01 (-26d) | 2026-09-20 → 2026-09-28 (+8d) |  |  |  |  |
| SDR-2-CON-MV-ZA-1320 | Excavation Works | 2026-08-27 → 2026-08-01 A (-26d) | 2026-09-20 → 2026-09-28 (+8d) | 0% → 50% | 21d → 55d | SDR-2-CON-MV-ZA-1280 SS → SDR-2-CON-MV-ZA-1280 FF |  |
| 7 | **Pipe laying** | 2026-09-21 → 2026-08-04 (-48d) | 2026-10-14 → 2026-09-28 (-16d) |  |  |  |  |
| SDR-2-CON-MV-ZA-1330 | Pipe Laying | 2026-09-21 → 2026-08-04 A (-48d) | 2026-10-14 → 2026-09-28 (-16d) | 0% → 50% | 21d → 55d | SDR-2-CON-MV-ZA-1320 → SDR-2-CON-MV-ZA-1320 FF |  |
| 8 | **Backfilling** | 2026-10-15 → 2026-08-08 (-68d) | 2026-11-07 → 2026-09-28 (-40d) |  |  |  |  |
| SDR-2-CON-MV-ZA-1350 | Backfilling Works | 2026-10-15 → 2026-08-08 A (-68d) | 2026-11-07 → 2026-09-28 (-40d) | 0% → 25% | 21d → 55d | SDR-2-CON-MV-ZA-1330 → SDR-2-CON-MV-ZA-1330 FF |  |
| 9 | **Pulling Cable** | 2026-11-19 → 2026-10-11 (-39d) | 2026-12-12 → 2026-11-02 (-40d) |  |  |  |  |
| SDR-2-CON-MV-ZA-1340 | Pulling Cable | 2026-11-19 → 2026-10-11 (-39d) | 2026-12-12 → 2026-11-02 (-40d) |  | 21d → 55d |  |  |
| 3 | **TELECOMMUNICATIONS Works** | 2026-09-14 → 2026-07-01 (-75d) | 2027-01-18 → 2026-11-14 (-65d) |  |  |  |  |
| 5 | **TELECOMMUNICATION IN ( PH2-G-MCA0 )** | 2026-09-14 → 2026-07-01 (-75d) | 2026-12-21 → 2026-11-14 (-37d) |  |  |  |  |
| 3 | **Ducts** | 2026-09-14 → 2026-07-01 (-75d) | 2026-12-15 → 2026-11-14 (-31d) |  |  |  |  |
| 2 | **Excavation** | 2026-09-14 → 2026-07-01 (-75d) | 2026-10-08 → 2026-09-28 (-10d) |  |  |  |  |
| SDR-2-CON-TE-ZA-4200 | Excavation for telecom crossing ducts & trenches | 2026-09-14 → 2026-07-01 A (-75d) | 2026-10-08 → 2026-09-28 (-10d) | 0% → 52% | 13d → 45d | SDR-2-CON-SL-ZA-1000 FS+15d → SDR-2-CON-SL-ZA-1000 FF | was named Excavation for telecom trench |
| 5 | **Pipe laying** | 2026-10-10 → 2026-08-13 (-58d) | 2026-10-29 → 2026-09-28 (-31d) |  |  |  |  |
| SDR-2-CON-TE-ZA-4210 | HDPE Pipes for Telecom Installation | 2026-10-10 → 2026-08-13 A (-58d) | 2026-10-29 → 2026-09-28 (-31d) | 0% → 52% | 18d → 45d | SDR-2-CON-TE-ZA-4200 → SDR-2-CON-TE-ZA-4200 FF |  |
| 6 | **Backfilling** | 2026-10-31 → 2026-09-29 (-32d) | 2026-11-22 → 2026-10-21 (-32d) |  |  |  |  |
| SDR-2-CON-TE-ZA-4220 | Backfilling over HDPE Telecom Pipes | 2026-10-31 → 2026-09-29 (-32d) | 2026-11-22 → 2026-10-21 (-32d) |  | 18d → 45d |  |  |
| 7 | **Pulling Cable** | 2026-11-23 → 2026-10-22 (-32d) | 2026-12-15 → 2026-11-14 (-31d) |  |  |  |  |
| SDR-2-CON-TE-ZA-4270 | Pulling Cable | 2026-11-23 → 2026-10-22 (-32d) | 2026-12-15 → 2026-11-14 (-31d) |  | 18d → 45d |  |  |
| 4 | **Manholes** | 2026-09-14 → 2026-08-15 (-30d) | 2026-12-21 → 2026-10-21 (-61d) |  |  |  |  |
| 1 | **Excavation** | 2026-09-14 → 2026-08-15 (-30d) | 2026-10-08 → 2026-09-28 (-10d) |  |  |  |  |
| SDR-2-CON-TE-ZA-4230 | Excavation for Telecom Manholes | 2026-09-14 → 2026-08-15 A (-30d) | 2026-10-08 → 2026-09-28 (-10d) | 0% → 53% | 13d → 65d | SDR-2-CON-TE-ZA-4200 SS → SDR-2-CON-TE-ZA-4200 FF | was named Excavation for Telecom Manhole |
| 2 | **Bedding Work** | 2026-10-10 → 2026-08-24 (-47d) | 2026-10-28 → 2026-09-28 (-30d) |  |  |  |  |
| SDR-2-CON-TE-ZA-4280 | Sand bedding for Telecom Manhole | 2026-10-10 → 2026-08-24 A (-47d) | 2026-10-28 → 2026-09-28 (-30d) | 0% → 20% | 13d → 65d | SDR-2-CON-TE-ZA-4230 → SDR-2-CON-TE-ZA-4230 FF |  |
| 3 | **Install Manholes** | 2026-10-29 → 2026-08-15 (-75d) | 2026-11-19 → 2026-09-28 (-52d) |  |  |  |  |
| SDR-2-CON-TE-ZA-4240 | Installation of Telecom Manhole | 2026-10-29 → 2026-08-15 A (-75d) | 2026-11-19 → 2026-09-28 (-52d) | 0% → 45% | 13d → 65d | SDR-2-CON-TE-ZA-4230, SDR-2-CON-TE-ZA-4280 → SDR-2-CON-TE-ZA-4230 FF, SDR-2-CON-TE-ZA-4280 FF |  |
| 4 | **Testting** | 2026-11-21 → 2026-09-02 (-80d) | 2026-11-28 → 2026-09-28 (-61d) |  |  |  |  |
| SDR-2-CON-TE-ZA-4250 | Telecom Manhole finishing works | 2026-11-21 → 2026-09-02 A (-80d) | 2026-11-28 → 2026-09-28 (-61d) | 0% → 25% | 13d → 65d | SDR-2-CON-TE-ZA-4240 → SDR-2-CON-TE-ZA-4240 FF |  |
| 5 | **Backfilling** | 2026-11-29 → 2026-09-29 (-61d) | 2026-12-21 → 2026-10-21 (-61d) |  |  |  |  |
| SDR-2-CON-TE-ZA-4260 | Backfilling over Telecom Manhole | 2026-11-29 → 2026-09-29 (-61d) | 2026-12-21 → 2026-10-21 (-61d) |  | 13d → 65d |  |  |
| 6 | **TELECOMMUNICATION IN ( PH2-G-MCE0 )** | 2026-09-14 → 2026-07-06 (-70d) | 2026-12-20 → 2026-10-31 (-50d) |  |  |  |  |
| 3 | **Ducts** | 2026-09-14 → 2026-07-06 (-70d) | 2026-12-17 → 2026-09-28 (-80d) |  |  |  |  |
| 2 | **Excavation** | 2026-09-14 → 2026-07-06 (-70d) | 2026-10-08 → 2026-07-20 (-80d) |  |  |  |  |
| SDR-2-CON-TE-ZA-4290 | Excavation for telecom crossing ducts & trenches | 2026-09-14 → 2026-07-06 A (-70d) | 2026-10-08 → 2026-07-20 A (-80d) | 0% → 100% | 11d → none | SDR-2-CON-SL-ZA-1000 FS+15d → SDR-2-CON-SL-ZA-1000 SS | was named Excavation for telecom trench |
| 5 | **Pipe laying** | 2026-10-10 → 2026-07-16 (-86d) | 2026-11-01 → 2026-09-28 (-34d) |  |  |  |  |
| SDR-2-CON-TE-ZA-4300 | HDPE Pipes for Telecom Installation | 2026-10-10 → 2026-07-16 A (-86d) | 2026-11-01 → 2026-09-28 (-34d) | 0% → 50% | 16d → 80d |  |  |
| 6 | **Backfilling** | 2026-11-02 → 2026-07-20 (-105d) | 2026-11-24 → 2026-09-28 (-57d) |  |  |  |  |
| SDR-2-CON-TE-ZA-4310 | Backfilling over HDPE Telecom Pipes | 2026-11-02 → 2026-07-20 A (-105d) | 2026-11-24 → 2026-09-28 (-57d) | 0% → 50% | 16d → 80d | SDR-2-CON-TE-ZA-4300 → SDR-2-CON-TE-ZA-4300 FF |  |
| 7 | **Pulling Cable** | 2026-11-25 → 2026-07-16 (-132d) | 2026-12-17 → 2026-09-28 (-80d) |  |  |  |  |
| SDR-2-CON-TE-ZA-4360 | Pulling Cable | 2026-11-25 → 2026-07-16 A (-132d) | 2026-12-17 → 2026-09-28 (-80d) | 0% → 50% | 16d → 80d | SDR-2-CON-TE-ZA-4310 → SDR-2-CON-TE-ZA-4310 FF |  |
| 4 | **Manholes** | 2026-09-14 → 2026-08-15 (-30d) | 2026-12-20 → 2026-10-31 (-50d) |  |  |  |  |
| 1 | **Excavation** | 2026-09-14 → 2026-08-15 (-30d) | 2026-10-08 → 2026-09-28 (-10d) |  |  |  |  |
| SDR-2-CON-TE-ZA-4320 | Excavation for Telecom Manholes | 2026-09-14 → 2026-08-15 A (-30d) | 2026-10-08 → 2026-09-28 (-10d) | 0% → 53% | 11d → 57d |  | was named Excavation for Telecom Manhole |
| 2 | **Bedding Work** | 2026-10-10 → 2026-08-17 (-54d) | 2026-10-26 → 2026-09-28 (-28d) |  |  |  |  |
| SDR-2-CON-TE-ZA-4370 | Sand bedding for Telecom Manhole | 2026-10-10 → 2026-08-17 A (-54d) | 2026-10-26 → 2026-09-28 (-28d) | 0% → 50% | 14d → 57d | SDR-2-CON-TE-ZA-4320 → SDR-2-CON-TE-ZA-4320 FF |  |
| 3 | **Install Manholes** | 2026-10-27 → 2026-08-19 (-69d) | 2026-11-17 → 2026-09-28 (-50d) |  |  |  |  |

| ID | Task | Start | Finish | Complete | Total float | Predecessors | Other |
| --- | --- | --- | --- | --- | --- | --- | --- |
| SDR-2-CON-TE-ZA-4330 | Installation of Telecom Manhole | 2026-10-27 → 2026-08-19 A (-69d) | 2026-11-17 → 2026-09-28 (-50d) | 0% → 50% | 14d → 57d | SDR-2-CON-TE-ZA-4320, SDR-2-CON-TE-ZA-4370 → SDR-2-CON-TE-ZA-4320 FF, SDR-2-CON-TE-ZA-4370 FF |  |
| 4 | **Testting** | 2026-11-18 → 2026-09-29 (-50d) | 2026-11-25 → 2026-10-06 (-50d) |  |  |  |  |
| SDR-2-CON-TE-ZA-4340 | Telecom Manhole finishing works | 2026-11-18 → 2026-09-29 (-50d) | 2026-11-25 → 2026-10-06 (-50d) |  | 14d → 57d |  |  |
| 5 | **Backfilling** | 2026-11-26 → 2026-10-07 (-50d) | 2026-12-20 → 2026-10-31 (-50d) |  |  |  |  |
| SDR-2-CON-TE-ZA-4350 | Backfilling over Telecom Manhole | 2026-11-26 → 2026-10-07 (-50d) | 2026-12-20 → 2026-10-31 (-50d) |  | 14d → 57d |  |  |
| 7 | **TELECOMMUNICATION IN ( PH2-G-MCF0 )** | 2026-10-10 → 2026-07-06 (-96d) | 2027-01-18 → 2026-10-29 (-81d) |  |  |  |  |
| 3 | **Ducts** | 2026-10-10 → 2026-07-06 (-96d) | 2027-01-11 → 2026-09-28 (-105d) |  |  |  |  |
| 2 | **Excavation** | 2026-10-10 → 2026-07-06 (-96d) | 2026-11-02 → 2026-09-28 (-35d) |  |  |  |  |
| SDR-2-CON-TE-ZA-4380 | Excavation for telecom crossing ducts & trenches | 2026-10-10 → 2026-07-06 A (-96d) | 2026-11-02 → 2026-09-28 (-35d) | 0% → 50% | 11d → 80d | SDR-2-CON-TE-ZA-4320, SDR-2-CON-SL-ZA-1000 → SDR-2-CON-SL-ZA-1000 FF, SDR-2-CON-TE-ZA-4320 FF | was named Excavation for telecom trench |
| 5 | **Pipe laying** | 2026-11-03 → 2026-07-16 (-110d) | 2026-11-24 → 2026-09-28 (-57d) |  |  |  |  |
| SDR-2-CON-TE-ZA-4390 | HDPE Pipes for Telecom Installation | 2026-11-03 → 2026-07-16 A (-110d) | 2026-11-24 → 2026-09-28 (-57d) | 0% → 50% | 17d → 107d | SDR-2-CON-TE-ZA-4380 → SDR-2-CON-TE-ZA-4380 FF |  |
| 6 | **Backfilling** | 2026-11-25 → 2026-08-16 (-101d) | 2026-12-17 → 2026-09-28 (-80d) |  |  |  |  |
| SDR-2-CON-TE-ZA-4400 | Backfilling over HDPE Telecom Pipes | 2026-11-25 → 2026-08-16 A (-101d) | 2026-12-17 → 2026-09-28 (-80d) | 0% → 50% | 17d → 107d | SDR-2-CON-TE-ZA-4390 → SDR-2-CON-TE-ZA-4390 FF |  |
| 7 | **Pulling Cable** | 2026-12-19 → 2026-07-16 (-156d) | 2027-01-11 → 2026-09-28 (-105d) |  |  |  |  |
| SDR-2-CON-TE-ZA-4450 | Pulling Cable | 2026-12-19 → 2026-07-16 A (-156d) | 2027-01-11 → 2026-09-28 (-105d) | 0% → 50% | 17d → 107d | SDR-2-CON-TE-ZA-4400 → SDR-2-CON-TE-ZA-4400 FF |  |
| 4 | **Manholes** | 2026-10-10 → 2026-08-15 (-56d) | 2027-01-18 → 2026-10-29 (-81d) |  |  |  |  |
| 1 | **Excavation** | 2026-10-10 → 2026-08-15 (-56d) | 2026-11-02 → 2026-09-28 (-35d) |  |  |  |  |
| SDR-2-CON-TE-ZA-4410 | Excavation for Telecom Manholes | 2026-10-10 → 2026-08-15 A (-56d) | 2026-11-02 → 2026-09-28 (-35d) | 0% → 55% | 11d → 80d | SDR-2-CON-TE-ZA-4380 SS → SDR-2-CON-TE-ZA-4380 FF | was named Excavation for Telecom Manhole |
| 2 | **Bedding Work** | 2026-11-03 → 2026-08-17 (-78d) | 2026-11-25 → 2026-09-28 (-58d) |  |  |  |  |
| SDR-2-CON-TE-ZA-4460 | Sand bedding for Telecom Manhole | 2026-11-03 → 2026-08-17 A (-78d) | 2026-11-25 → 2026-09-28 (-58d) | 0% → 50% | 11d → 80d | SDR-2-CON-TE-ZA-4410 → SDR-2-CON-TE-ZA-4410 FF |  |
| 3 | **Install Manholes** | 2026-11-26 → 2026-08-19 (-99d) | 2026-12-17 → 2026-09-28 (-80d) |  |  |  |  |
| SDR-2-CON-TE-ZA-4420 | Installation of Telecom Manhole | 2026-11-26 → 2026-08-19 A (-99d) | 2026-12-17 → 2026-09-28 (-80d) | 0% → 50% | 11d → 80d | SDR-2-CON-TE-ZA-4410, SDR-2-CON-TE-ZA-4460 → SDR-2-CON-TE-ZA-4410 FF, SDR-2-CON-TE-ZA-4460 FF |  |
| 4 | **Testting** | 2026-12-19 → 2026-09-29 (-81d) | 2026-12-26 → 2026-10-06 (-81d) |  |  |  |  |
| SDR-2-CON-TE-ZA-4430 | Telecom Manhole finishing works | 2026-12-19 → 2026-09-29 (-81d) | 2026-12-26 → 2026-10-06 (-81d) |  | 11d → 80d |  |  |
| 5 | **Backfilling** | 2026-12-27 → 2026-10-07 (-81d) | 2027-01-18 → 2026-10-29 (-81d) |  |  |  |  |
| SDR-2-CON-TE-ZA-4440 | Backfilling over Telecom Manhole | 2026-12-27 → 2026-10-07 (-81d) | 2027-01-18 → 2026-10-29 (-81d) |  | 11d → 80d |  |  |
| 4 | **TELECOMMUNICATION IN ( PH2-G-MCG0 )** | 2026-09-14 → 2026-07-06 (-70d) | 2027-01-02 → 2026-11-11 (-52d) |  |  |  |  |
| 3 | **Ducts** | 2026-09-14 → 2026-07-06 (-70d) | 2026-12-15 → 2026-09-28 (-78d) |  |  |  |  |
| 2 | **Excavation** | 2026-09-14 → 2026-07-06 (-70d) | 2026-10-08 → 2026-09-28 (-10d) |  |  |  |  |
| SDR-2-CON-TE-ZA-4470 | Excavation for telecom crossing ducts & trenches | 2026-09-14 → 2026-07-06 A (-70d) | 2026-10-08 → 2026-09-28 (-10d) | 0% → 50% | 4d → 80d | SDR-2-CON-SL-ZA-1000 FS+15d → SDR-2-CON-SL-ZA-1000 FF | was named Excavation for telecom trench |
| 5 | **Pipe laying** | 2026-10-10 → 2026-07-15 (-87d) | 2026-10-29 → 2026-09-28 (-31d) |  |  |  |  |
| SDR-2-CON-TE-ZA-4480 | HDPE Pipes for Telecom Installation | 2026-10-10 → 2026-07-15 A (-87d) | 2026-10-29 → 2026-09-28 (-31d) | 0% → 55% | 19d → 80d | SDR-2-CON-TE-ZA-4470 → SDR-2-CON-TE-ZA-4470 FF |  |
| 6 | **Backfilling** | 2026-10-31 → 2026-08-16 (-76d) | 2026-11-22 → 2026-09-28 (-55d) |  |  |  |  |
| SDR-2-CON-TE-ZA-4490 | Backfilling over HDPE Telecom Pipes | 2026-10-31 → 2026-08-16 A (-76d) | 2026-11-22 → 2026-09-28 (-55d) | 0% → 55% | 19d → 80d | SDR-2-CON-TE-ZA-4480 → SDR-2-CON-TE-ZA-4480 FF |  |
| 7 | **Pulling Cable** | 2026-11-23 → 2026-07-14 (-132d) | 2026-12-15 → 2026-09-28 (-78d) |  |  |  |  |
| SDR-2-CON-TE-ZA-4540 | Pulling Cable | 2026-11-23 → 2026-07-14 A (-132d) | 2026-12-15 → 2026-09-28 (-78d) | 0% → 55% | 19d → 80d | SDR-2-CON-TE-ZA-4490 → SDR-2-CON-TE-ZA-4490 FF |  |
| 4 | **Manholes** | 2026-09-14 → 2026-08-15 (-30d) | 2027-01-02 → 2026-11-11 (-52d) |  |  |  |  |
| 1 | **Excavation** | 2026-09-14 → 2026-08-15 (-30d) | 2026-10-08 → 2026-09-28 (-10d) |  |  |  |  |
| SDR-2-CON-TE-ZA-4500 | Excavation for Telecom Manholes | 2026-09-14 → 2026-08-15 A (-30d) | 2026-10-08 → 2026-09-28 (-10d) | 0% → 76% | 4d → 134d | SDR-2-CON-TE-ZA-4470 SS → SDR-2-CON-TE-ZA-4470 FF | was named Excavation for Telecom Manhole |
| 2 | **Bedding Work** | 2026-10-10 → 2026-08-17 (-54d) | 2026-10-26 → 2026-09-28 (-28d) |  |  |  |  |
| SDR-2-CON-TE-ZA-4550 | Sand bedding for Telecom Manhole | 2026-10-10 → 2026-08-17 A (-54d) | 2026-10-26 → 2026-09-28 (-28d) | 0% → 75% | 4d → 134d | SDR-2-CON-TE-ZA-4500 → SDR-2-CON-TE-ZA-4500 FF |  |
| 3 | **Install Manholes** | 2026-10-27 → 2026-08-19 (-69d) | 2026-11-18 → 2026-09-28 (-51d) |  |  |  |  |
| SDR-2-CON-TE-ZA-4510 | Installation of Telecom Manhole | 2026-10-27 → 2026-08-19 A (-69d) | 2026-11-18 → 2026-09-28 (-51d) | 0% → 75% | 4d → 134d | SDR-2-CON-TE-ZA-4500, SDR-2-CON-TE-ZA-4550 → SDR-2-CON-TE-ZA-4500 FF, SDR-2-CON-TE-ZA-4550 FF |  |
| 4 | **Testting** | 2026-11-19 → 2026-09-29 (-51d) | 2026-11-26 → 2026-10-06 (-51d) |  |  |  |  |
| SDR-2-CON-TE-ZA-4520 | Telecom Manhole finishing works | 2026-11-19 → 2026-09-29 (-51d) | 2026-11-26 → 2026-10-06 (-51d) |  | 4d → 134d |  |  |
| 5 | **Backfilling** | 2026-12-09 → 2026-10-19 (-51d) | 2027-01-02 → 2026-11-11 (-52d) |  |  |  |  |
| SDR-2-CON-TE-ZA-4530 | Backfilling over Telecom Manhole | 2026-12-09 → 2026-10-19 (-51d) | 2027-01-02 → 2026-11-11 (-52d) |  | 4d → 134d |  |  |
| LI | **Landscape & Irrigation Works** | 2027-05-08 → 2026-08-01 (-280d) | 2027-07-05 → 2027-07-04 (-1d) |  |  |  |  |
| ZA | **ZONE A** | 2027-05-08 → 2026-08-01 (-280d) | 2027-07-05 → 2027-07-04 (-1d) |  |  |  |  |
| 2 | **IRRIGATION WORKS** | 2027-05-08 → 2026-08-01 (-280d) | 2027-07-05 → 2027-07-04 (-1d) |  |  |  |  |
| 1 | **IRRIGATION WORKS IN ( PH2-COL-MC10 )** | 2027-05-08 → 2026-08-01 (-280d) | 2027-07-05 → 2027-06-13 (-22d) |  |  |  |  |
| 7 | **Pre install** | 2027-05-08 → 2026-08-01 (-280d) | 2027-06-03 → 2027-05-06 (-28d) |  |  |  |  |
| SDR-2-CON-IR-ZA-1000 | Pre Install for irrigation Works | 2027-05-08 → 2026-08-01 A (-280d) | 2027-06-03 → 2027-05-06 (-28d) | 0% → 15% |  | SDR-2-MILS-1050, SDR-2-CON-ST-ZA-5970, SDR-2-CON-ST-ZA-5220, SDR-2-CON-ST-ZA-4020 SS, SDR-2-CON-SE-ZA-1000, SDR-2-CON-SE-ZA-1420, SDR-2-CON-SE-ZA-1010, SDR-2-CON-SE-ZA-1020, SDR-2-CON-SE-ZA-1430, SDR-2-CON-SE-ZA-1030, SDR-2-CON-SE-ZA-1450, SDR-2-CON-SE-ZA-1040, SDR-2-CON-SE-ZA-1050, SDR-2-CON-SE-ZA-1440, SDR-2-CON-SE-ZA-1460, SDR-2-CON-SE-ZA-1520, SDR-2-CON-SE-ZA-1470, SDR-2-CON-SE-ZA-1480, SDR-2-CON-SE-ZA-1530, SDR-2-CON-SE-ZA-1490, SDR-2-CON-SE-ZA-1550, SDR-2-CON-SE-ZA-1500, SDR-2-CON-SE-ZA-1510, SDR-2-CON-SE-ZA-1540, SDR-2-CON-SE-ZA-1560, SDR-2-CON-SE-ZA-1620, SDR-2-CON-SE-ZA-1570, SDR-2-CON-SE-ZA-1580, SDR-2-CON-SE-ZA-1630, SDR-2-CON-SE-ZA-1590, SDR-2-CON-SE-ZA-1650, SDR-2-CON-SE-ZA-1600, SDR-2-CON-SE-ZA-1610, SDR-2-CON-SE-ZA-1660, SDR-2-CON-SE-ZA-1720, SDR-2-CON-SE-ZA-1670, SDR-2-CON-SE-ZA-1680, SDR-2-CON-SE-ZA-1730, SDR-2-CON-SE-ZA-1690, SDR-2-CON-SE-ZA-1750, SDR-2-CON-SE-ZA-1700, SDR-2-CON-SE-ZA-1710, SDR-2-CON-SE-ZA-1740, SDR-2-CON-SE-ZA-1760, SDR-2-CON-SE-ZA-1820, SDR-2-CON-SE-ZA-1770, SDR-2-CON-SE-ZA-1780, SDR-2-CON-SE-ZA-1830, SDR-2-CON-SE-ZA-1790, SDR-2-CON-SE-ZA-1850, SDR-2-CON-SE-ZA-1800, SDR-2-CON-SE-ZA-1810, SDR-2-CON-SE-ZA-1840, SDR-2-CON-SE-ZA-1860, SDR-2-CON-SE-ZA-1920, SDR-2-CON-SE-ZA-1870, SDR-2-CON-SE-ZA-1880, SDR-2-CON-SE-ZA-1930, SDR-2-CON-SE-ZA-1890, SDR-2-CON-SE-ZA-1950, SDR-2-CON-SE-ZA-1900, SDR-2-CON-SE-ZA-1910, SDR-2-CON-SE-ZA-1940, SDR-2-CON-SE-ZA-1960, SDR-2-CON-SE-ZA-2020, SDR-2-CON-SE-ZA-1970, SDR-2-CON-SE-ZA-1980, SDR-2-CON-SE-ZA-2030, SDR-2-CON-SE-ZA-1990, SDR-2-CON-SE-ZA-2050, SDR-2-CON-SE-ZA-2000, SDR-2-CON-SE-ZA-2010, SDR-2-CON-SE-ZA-2040, SDR-2-CON-SE-ZA-2060, SDR-2-CON-SE-ZA-2120, SDR-2-CON-SE-ZA-2070, SDR-2-CON-SE-ZA-2080, SDR-2-CON-SE-ZA-2130, SDR-2-CON-SE-ZA-2090, SDR-2-CON-SE-ZA-2150, SDR-2-CON-SE-ZA-2100, SDR-2-CON-SE-ZA-2110, SDR-2-CON-SE-ZA-2140, SDR-2-CON-SE-ZA-2160, SDR-2-CON-SE-ZA-2220, SDR-2-CON-SE-ZA-2170, SDR-2-CON-SE-ZA-2180, SDR-2-CON-SE-ZA-2230, SDR-2-CON-SE-ZA-2190, SDR-2-CON-SE-ZA-2250, SDR-2-CON-SE-ZA-2200, SDR-2-CON-SE-ZA-2210, SDR-2-CON-SE-ZA-2240, SDR-2-CON-SE-ZA-2260, SDR-2-CON-SE-ZA-2320, SDR-2-CON-SE-ZA-2270, SDR-2-CON-SE-ZA-2280, SDR-2-CON-SE-ZA-2330, SDR-2-CON-SE-ZA-2290, SDR-2-CON-SE-ZA-2350, SDR-2-CON-SE-ZA-2300, SDR-2-CON-SE-ZA-2310, SDR-2-CON-SE-ZA-2340, SDR-2-CON-SE-ZA-2360, SDR-2-CON-SE-ZA-2420, SDR-2-CON-SE-ZA-2370, SDR-2-CON-SE-ZA-2380, SDR-2-CON-SE-ZA-2430, SDR-2-CON-SE-ZA-2390, SDR-2-CON-SE-ZA-2450, SDR-2-CON-SE-ZA-2400, SDR-2-CON-SE-ZA-2410, SDR-2-CON-SE-ZA-2440, SDR-2-CON-TS-ZA-1000, SDR-2-CON-TS-ZA-1900, SDR-2-CON-TS-ZA-1010, SDR-2-CON-TS-ZA-1080, SDR-2-CON-TS-ZA-1910, SDR-2-CON-TS-ZA-1040, SDR-2-CON-TS-ZA-1020, SDR-2-CON-TS-ZA-1050, SDR-2-CON-TS-ZA-1060, SDR-2-CON-TS-ZA-1070, SDR-2-CON-TS-ZA-2200, SDR-2-CON-TS-ZA-2280, SDR-2-CON-TS-ZA-2210, SDR-2-CON-TS-ZA-2270, SDR-2-CON-TS-ZA-2290, SDR-2-CON-TS-ZA-2230, SDR-2-CON-TS-ZA-2220, SDR-2-CON-TS-ZA-2240, SDR-2-CON-TS-ZA-2250, SDR-2-CON-TS-ZA-2260, SDR-2-CON-TS-ZA-1180, SDR-2-CON-TS-ZA-1920, SDR-2-CON-TS-ZA-1190, SDR-2-CON-TS-ZA-1260, SDR-2-CON-TS-ZA-1930, SDR-2-CON-TS-ZA-2010, SDR-2-CON-TS-ZA-2000, SDR-2-CON-TS-ZA-2020, SDR-2-CON-TS-ZA-2030, SDR-2-CON-TS-ZA-2040, SDR-2-CON-TS-ZA-1270, SDR-2-CON-TS-ZA-1940, SDR-2-CON-TS-ZA-1280, SDR-2-CON-TS-ZA-1350, SDR-2-CON-TS-ZA-1950, SDR-2-CON-TS-ZA-2060, SDR-2-CON-TS-ZA-2050, SDR-2-CON-TS-ZA-2070, SDR-2-CON-TS-ZA-2080, SDR-2-CON-TS-ZA-2090, SDR-2-CON-TS-ZA-2600, SDR-2-CON-TS-ZA-2630, SDR-2-CON-TS-ZA-2610, SDR-2-CON-TS-ZA-2620, SDR-2-CON-TS-ZA-2640, SDR-2-CON-TS-ZA-2660, SDR-2-CON-TS-ZA-2650, SDR-2-CON-TS-ZA-2670, SDR-2-CON-TS-ZA-2680, SDR-2-CON-TS-ZA-2690, SDR-2-CON-TS-ZA-2700, SDR-2-CON-TS-ZA-2730, SDR-2-CON-TS-ZA-2710, SDR-2-CON-TS-ZA-2720, SDR-2-CON-TS-ZA-2740, SDR-2-CON-TS-ZA-2760, SDR-2-CON-TS-ZA-2750, SDR-2-CON-TS-ZA-2770, SDR-2-CON-TS-ZA-2780, SDR-2-CON-TS-ZA-2790, SDR-2-CON-TS-ZA-2800, SDR-2-CON-TS-ZA-2830, SDR-2-CON-TS-ZA-2810, SDR-2-CON-TS-ZA-2820, SDR-2-CON-TS-ZA-2840, SDR-2-CON-TS-ZA-2860, SDR-2-CON-TS-ZA-2850, SDR-2-CON-TS-ZA-2870, SDR-2-CON-TS-ZA-2880, SDR-2-CON-TS-ZA-2890, SDR-2-CON-TS-ZA-1630, SDR-2-CON-TS-ZA-1960, SDR-2-CON-TS-ZA-1640, SDR-2-CON-TS-ZA-1710, SDR-2-CON-TS-ZA-1970, SDR-2-CON-TS-ZA-2110, SDR-2-CON-TS-ZA-2100, SDR-2-CON-TS-ZA-2120, SDR-2-CON-TS-ZA-2130, SDR-2-CON-TS-ZA-2140, SDR-2-CON-TS-ZA-1720, SDR-2-CON-TS-ZA-1980, SDR-2-CON-TS-ZA-1730, SDR-2-CON-TS-ZA-1800, SDR-2-CON-TS-ZA-1990, SDR-2-CON-TS-ZA-2160, SDR-2-CON-TS-ZA-2150, SDR-2-CON-TS-ZA-2170, SDR-2-CON-TS-ZA-2180, SDR-2-CON-TS-ZA-2190, SDR-2-CON-TS-ZA-3100, SDR-2-CON-TS-ZA-3130, SDR-2-CON-TS-ZA-3110, SDR-2-CON-TS-ZA-3120, SDR-2-CON-TS-ZA-3140, SDR-2-CON-TS-ZA-3160, SDR-2-CON-TS-ZA-3150, SDR-2-CON-TS-ZA-3170, SDR-2-CON-TS-ZA-3180, SDR-2-CON-TS-ZA-3190, SDR-2-CON-TS-ZA-2300, SDR-2-CON-TS-ZA-2380, SDR-2-CON-TS-ZA-2310, SDR-2-CON-TS-ZA-2370, SDR-2-CON-TS-ZA-2390, SDR-2-CON-TS-ZA-2330, SDR-2-CON-TS-ZA-2320, SDR-2-CON-TS-ZA-2340, SDR-2-CON-TS-ZA-2350, SDR-2-CON-TS-ZA-2360, SDR-2-CON-TS-ZA-2400, SDR-2-CON-TS-ZA-2430, SDR-2-CON-TS-ZA-2410, SDR-2-CON-TS-ZA-2420, SDR-2-CON-TS-ZA-2440, SDR-2-CON-TS-ZA-2460, SDR-2-CON-TS-ZA-2450, SDR-2-CON-TS-ZA-2470, SDR-2-CON-TS-ZA-2480, SDR-2-CON-TS-ZA-2490, SDR-2-CON-TS-ZA-2900, SDR-2-CON-TS-ZA-2930, SDR-2-CON-TS-ZA-2910, SDR-2-CON-TS-ZA-2920, SDR-2-CON-TS-ZA-2940, SDR-2-CON-TS-ZA-2960, SDR-2-CON-TS-ZA-2950, SDR-2-CON-TS-ZA-2970, SDR-2-CON-TS-ZA-2980, SDR-2-CON-TS-ZA-2990, SDR-2-CON-TS-ZA-3000, SDR-2-CON-TS-ZA-3030, SDR-2-CON-TS-ZA-3010, SDR-2-CON-TS-ZA-3020, SDR-2-CON-TS-ZA-3040, SDR-2-CON-TS-ZA-3060, SDR-2-CON-TS-ZA-3050, SDR-2-CON-TS-ZA-3070, SDR-2-CON-TS-ZA-3080, SDR-2-CON-TS-ZA-3090, SDR-2-CON-TS-ZA-2500, SDR-2-CON-TS-ZA-2530, SDR-2-CON-TS-ZA-2510, SDR-2-CON-TS-ZA-2520, SDR-2-CON-TS-ZA-2540 SS, SDR-2-CON-TS-ZA-2560, SDR-2-CON-TS-ZA-2550, SDR-2-CON-TS-ZA-2570, SDR-2-CON-TS-ZA-2580, SDR-2-CON-TS-ZA-2590, SDR-2-CON-PW-ZA-1000, SDR-2-CON-PW-ZA-2200, SDR-2-CON-PW-ZA-1010, SDR-2-CON-PW-ZA-1080, SDR-2-CON-PW-ZA-2210 SS, SDR-2-CON-PW-ZA-1040, SDR-2-CON-PW-ZA-1020, SDR-2-CON-PW-ZA-1050, SDR-2-CON-PW-ZA-1030, SDR-2-CON-PW-ZA-1070, SDR-2-CON-PW-ZA-2260, SDR-2-CON-PW-ZA-2340, SDR-2-CON-PW-ZA-2270, SDR-2-CON-PW-ZA-2330, SDR-2-CON-PW-ZA-2350 SS, SDR-2-CON-PW-ZA-2300, SDR-2-CON-PW-ZA-2280, SDR-2-CON-PW-ZA-2310, SDR-2-CON-PW-ZA-2290, SDR-2-CON-PW-ZA-1200, SDR-2-CON-PW-ZA-2220, SDR-2-CON-PW-ZA-1210, SDR-2-CON-PW-ZA-1280, SDR-2-CON-PW-ZA-2230 SS, SDR-2-CON-PW-ZA-2680, SDR-2-CON-PW-ZA-2660, SDR-2-CON-PW-ZA-2690, SDR-2-CON-PW-ZA-2670, SDR-2-CON-PW-ZA-2700 SS, SDR-2-CON-PW-ZA-2710, SDR-2-CON-PW-ZA-2740, SDR-2-CON-PW-ZA-2720, SDR-2-CON-PW-ZA-2730, SDR-2-CON-PW-ZA-2750 FS+3d, SDR-2-CON-PW-ZA-2780, SDR-2-CON-PW-ZA-2760, SDR-2-CON-PW-ZA-2790, SDR-2-CON-PW-ZA-2770, SDR-2-CON-PW-ZA-2800 FS+3d, SDR-2-CON-PW-ZA-1400, SDR-2-CON-PW-ZA-2240, SDR-2-CON-PW-ZA-1410, SDR-2-CON-PW-ZA-1480, SDR-2-CON-PW-ZA-2250, SDR-2-CON-PW-ZA-3230, SDR-2-CON-PW-ZA-3210, SDR-2-CON-PW-ZA-3240, SDR-2-CON-PW-ZA-3220, SDR-2-CON-PW-ZA-3250, SDR-2-CON-PW-ZA-3260, SDR-2-CON-PW-ZA-3290, SDR-2-CON-PW-ZA-3270, SDR-2-CON-PW-ZA-3280, SDR-2-CON-PW-ZA-3300 FS+2.8d, SDR-2-CON-PW-ZA-3330, SDR-2-CON-PW-ZA-3310, SDR-2-CON-PW-ZA-3340, SDR-2-CON-PW-ZA-3320, SDR-2-CON-PW-ZA-3350, SDR-2-CON-PW-ZA-3360, SDR-2-CON-PW-ZA-3390, SDR-2-CON-PW-ZA-3370, SDR-2-CON-PW-ZA-3380, SDR-2-CON-PW-ZA-3400, SDR-2-CON-PW-ZA-3430, SDR-2-CON-PW-ZA-3410, SDR-2-CON-PW-ZA-3440, SDR-2-CON-PW-ZA-3420, SDR-2-CON-PW-ZA-3450, SDR-2-CON-PW-ZA-3460, SDR-2-CON-PW-ZA-3490, SDR-2-CON-PW-ZA-3470, SDR-2-CON-PW-ZA-3480, SDR-2-CON-PW-ZA-3500 SS, SDR-2-CON-PW-ZA-3530, SDR-2-CON-PW-ZA-3510, SDR-2-CON-PW-ZA-3540, SDR-2-CON-PW-ZA-3520, SDR-2-CON-PW-ZA-3550 SS, SDR-2-CON-PW-ZA-3560, SDR-2-CON-PW-ZA-3590, SDR-2-CON-PW-ZA-3570, SDR-2-CON-PW-ZA-3580, SDR-2-CON-PW-ZA-3600 SS, SDR-2-CON-PW-ZA-3630, SDR-2-CON-PW-ZA-3610, SDR-2-CON-PW-ZA-3640, SDR-2-CON-PW-ZA-3620, SDR-2-CON-PW-ZA-3650 SS, SDR-2-CON-PW-ZA-2810, SDR-2-CON-PW-ZA-2840, SDR-2-CON-PW-ZA-2820, SDR-2-CON-PW-ZA-2830, SDR-2-CON-PW-ZA-2850 SS, SDR-2-CON-PW-ZA-2880, SDR-2-CON-PW-ZA-2860, SDR-2-CON-PW-ZA-2890, SDR-2-CON-PW-ZA-2870, SDR-2-CON-PW-ZA-2900 SS, SDR-2-CON-PW-ZA-2360, SDR-2-CON-PW-ZA-2440, SDR-2-CON-PW-ZA-2370, SDR-2-CON-PW-ZA-2430, SDR-2-CON-PW-ZA-2450 SS, SDR-2-CON-PW-ZA-2400, SDR-2-CON-PW-ZA-2380, SDR-2-CON-PW-ZA-2410, SDR-2-CON-PW-ZA-2390, SDR-2-CON-PW-ZA-2420 SS, SDR-2-CON-PW-ZA-2460, SDR-2-CON-PW-ZA-2540, SDR-2-CON-PW-ZA-2470, SDR-2-CON-PW-ZA-2530, SDR-2-CON-PW-ZA-2550 SS, SDR-2-CON-PW-ZA-2500, SDR-2-CON-PW-ZA-2480, SDR-2-CON-PW-ZA-2510, SDR-2-CON-PW-ZA-2490, SDR-2-CON-PW-ZA-2520 SS, SDR-2-CON-PW-ZG-1000, SDR-2-CON-PW-ZG-1500, SDR-2-CON-PW-ZG-1010, SDR-2-CON-PW-ZG-1080, SDR-2-CON-PW-ZG-1510 SS, SDR-2-CON-PW-ZA-3680, SDR-2-CON-PW-ZA-3660, SDR-2-CON-PW-ZA-3690, SDR-2-CON-PW-ZA-3670, SDR-2-CON-PW-ZA-3700 SS, SDR-2-CON-PW-ZA-2910, SDR-2-CON-PW-ZA-2940, SDR-2-CON-PW-ZA-2920, SDR-2-CON-PW-ZA-2930, SDR-2-CON-PW-ZA-2950 SS, SDR-2-CON-PW-ZA-2980, SDR-2-CON-PW-ZA-2960, SDR-2-CON-PW-ZA-2990, SDR-2-CON-PW-ZA-2970 SS, SDR-2-CON-PW-ZA-3010, SDR-2-CON-PW-ZA-3040, SDR-2-CON-PW-ZA-3020, SDR-2-CON-PW-ZA-3030, SDR-2-CON-PW-ZA-3050 SS, SDR-2-CON-PW-ZA-3080, SDR-2-CON-PW-ZA-3060, SDR-2-CON-PW-ZA-3090, SDR-2-CON-PW-ZA-3070, SDR-2-CON-PW-ZA-3100 SS, SDR-2-CON-PW-ZA-3110, SDR-2-CON-PW-ZA-3140, SDR-2-CON-PW-ZA-3120, SDR-2-CON-PW-ZA-3130, SDR-2-CON-PW-ZA-3150 SS, SDR-2-CON-PW-ZA-3180, SDR-2-CON-PW-ZA-3160, SDR-2-CON-PW-ZA-3190, SDR-2-CON-PW-ZA-3170, SDR-2-CON-PW-ZA-3200 SS, SDR-2-CON-PW-ZA-2560, SDR-2-CON-PW-ZA-2640, SDR-2-CON-PW-ZA-2570, SDR-2-CON-PW-ZA-2630, SDR-2-CON-PW-ZA-2650 SS, SDR-2-CON-PW-ZA-2600, SDR-2-CON-PW-ZA-2580, SDR-2-CON-PW-ZA-2610, SDR-2-CON-PW-ZA-2590, SDR-2-CON-PW-ZA-2620 SS, SDR-2-CON-SL-ZA-1000, SDR-2-CON-SL-ZA-1010, SDR-2-CON-SL-ZA-1110, SDR-2-CON-SL-ZA-1100, SDR-2-CON-SL-ZA-2870, SDR-2-CON-SL-ZA-2880, SDR-2-CON-SL-ZA-2900, SDR-2-CON-SL-ZA-2890, SDR-2-CON-SL-ZA-1300, SDR-2-CON-SL-ZA-1310, SDR-2-CON-SL-ZA-1410, SDR-2-CON-SL-ZA-1400, SDR-2-CON-SL-ZA-2950, SDR-2-CON-SL-ZA-2960, SDR-2-CON-SL-ZA-2980, SDR-2-CON-SL-ZA-2970, SDR-2-CON-SL-ZA-2990, SDR-2-CON-SL-ZA-3000, SDR-2-CON-SL-ZA-3020, SDR-2-CON-SL-ZA-3010, SDR-2-CON-SL-ZA-3030, SDR-2-CON-SL-ZA-3040, SDR-2-CON-SL-ZA-3060, SDR-2-CON-SL-ZA-3050, SDR-2-CON-SL-ZA-3070, SDR-2-CON-SL-ZA-3080, SDR-2-CON-SL-ZA-3100, SDR-2-CON-SL-ZA-3090, SDR-2-CON-SL-ZA-3110, SDR-2-CON-SL-ZA-3120, SDR-2-CON-SL-ZA-3140, SDR-2-CON-SL-ZA-3130, SDR-2-CON-SL-ZA-3150, SDR-2-CON-SL-ZA-3160, SDR-2-CON-SL-ZA-3180, SDR-2-CON-SL-ZA-3170, SDR-2-CON-SL-ZA-3190, SDR-2-CON-SL-ZA-3200, SDR-2-CON-SL-ZA-3220, SDR-2-CON-SL-ZA-3210, SDR-2-CON-SL-ZA-2910, SDR-2-CON-SL-ZA-2920, SDR-2-CON-SL-ZA-2940, SDR-2-CON-SL-ZA-2930, SDR-2-CON-SL-ZA-2650, SDR-2-CON-SL-ZA-2760, SDR-2-CON-SL-ZA-2770, SDR-2-CON-SL-ZA-2780, SDR-2-CON-SL-ZA-2660, SDR-2-CON-SL-ZA-2790, SDR-2-CON-SL-ZA-2800, SDR-2-CON-SL-ZA-2670, SDR-2-CON-SL-ZA-2810, SDR-2-CON-SL-ZA-2820, SDR-2-CON-SL-ZA-2680, SDR-2-CON-SL-ZA-2830, SDR-2-CON-SL-ZA-2840, SDR-2-CON-SL-ZA-2690, SDR-2-CON-SL-ZA-2850, SDR-2-CON-SL-ZA-2860, SDR-2-CON-MV-ZA-1000, SDR-2-CON-MV-ZA-1070, SDR-2-CON-MV-ZA-1150, SDR-2-CON-MV-ZA-1100, SDR-2-CON-MV-ZA-1160, SDR-2-CON-MV-ZA-1170, SDR-2-CON-MV-ZA-1190, SDR-2-CON-MV-ZA-1180, SDR-2-CON-MV-ZA-1200, SDR-2-CON-MV-ZA-1210, SDR-2-CON-MV-ZA-1230, SDR-2-CON-MV-ZA-1220, SDR-2-CON-MV-ZA-1240, SDR-2-CON-MV-ZA-1250, SDR-2-CON-MV-ZA-1270, SDR-2-CON-MV-ZA-1260, SDR-2-CON-TE-ZA-1000, SDR-2-CON-TE-ZA-1010, SDR-2-CON-TE-ZA-1020, SDR-2-CON-TE-ZA-1840, SDR-2-CON-TE-ZA-1030, SDR-2-CON-TE-ZA-1850, SDR-2-CON-TE-ZA-1040, SDR-2-CON-TE-ZA-1050, SDR-2-CON-TE-ZA-1060, SDR-2-CON-TE-ZA-3210, SDR-2-CON-TE-ZA-3220, SDR-2-CON-TE-ZA-3230, SDR-2-CON-TE-ZA-3280, SDR-2-CON-TE-ZA-3240, SDR-2-CON-TE-ZA-3290, SDR-2-CON-TE-ZA-3250, SDR-2-CON-TE-ZA-3260, SDR-2-CON-TE-ZA-3270, SDR-2-CON-TE-ZA-3300, SDR-2-CON-TE-ZA-3310, SDR-2-CON-TE-ZA-3320, SDR-2-CON-TE-ZA-3370, SDR-2-CON-TE-ZA-3330, SDR-2-CON-TE-ZA-3380, SDR-2-CON-TE-ZA-3340, SDR-2-CON-TE-ZA-3350, SDR-2-CON-TE-ZA-3360, SDR-2-CON-TE-ZA-3390, SDR-2-CON-TE-ZA-3400, SDR-2-CON-TE-ZA-3410, SDR-2-CON-TE-ZA-3460, SDR-2-CON-TE-ZA-3420, SDR-2-CON-TE-ZA-3470, SDR-2-CON-TE-ZA-3430, SDR-2-CON-TE-ZA-3440, SDR-2-CON-TE-ZA-3450, SDR-2-CON-TE-ZA-3480, SDR-2-CON-TE-ZA-3490, SDR-2-CON-TE-ZA-3500, SDR-2-CON-TE-ZA-3550, SDR-2-CON-TE-ZA-3510, SDR-2-CON-TE-ZA-3560, SDR-2-CON-TE-ZA-3520, SDR-2-CON-TE-ZA-3530, SDR-2-CON-TE-ZA-3540, SDR-2-CON-TE-ZA-3570, SDR-2-CON-TE-ZA-3580, SDR-2-CON-TE-ZA-3590, SDR-2-CON-TE-ZA-3640, SDR-2-CON-TE-ZA-3600, SDR-2-CON-TE-ZA-3650, SDR-2-CON-TE-ZA-3610, SDR-2-CON-TE-ZA-3620, SDR-2-CON-TE-ZA-3630, SDR-2-CON-TE-ZA-3660, SDR-2-CON-TE-ZA-3670, SDR-2-CON-TE-ZA-3680, SDR-2-CON-TE-ZA-3730, SDR-2-CON-TE-ZA-3690, SDR-2-CON-TE-ZA-3740, SDR-2-CON-TE-ZA-3700, SDR-2-CON-TE-ZA-3710, SDR-2-CON-TE-ZA-3720, SDR-2-CON-TE-ZA-3750, SDR-2-CON-TE-ZA-3760, SDR-2-CON-TE-ZA-3770, SDR-2-CON-TE-ZA-3820, SDR-2-CON-TE-ZA-3780, SDR-2-CON-TE-ZA-3830, SDR-2-CON-TE-ZA-3790, SDR-2-CON-TE-ZA-3800, SDR-2-CON-TE-ZA-3810, SDR-2-CON-TE-ZA-3840, SDR-2-CON-TE-ZA-3850, SDR-2-CON-TE-ZA-3860, SDR-2-CON-TE-ZA-3910, SDR-2-CON-TE-ZA-3870, SDR-2-CON-TE-ZA-3920, SDR-2-CON-TE-ZA-3880, SDR-2-CON-TE-ZA-3890, SDR-2-CON-TE-ZA-3900, SDR-2-CON-TE-ZA-3930, SDR-2-CON-TE-ZA-3940, SDR-2-CON-TE-ZA-3950, SDR-2-CON-TE-ZA-4000, SDR-2-CON-TE-ZA-3960, SDR-2-CON-TE-ZA-4010, SDR-2-CON-TE-ZA-3970, SDR-2-CON-TE-ZA-3980, SDR-2-CON-TE-ZA-3990, SDR-2-CON-TE-ZA-4020, SDR-2-CON-TE-ZA-4030, SDR-2-CON-TE-ZA-4040, SDR-2-CON-TE-ZA-4090, SDR-2-CON-TE-ZA-4050, SDR-2-CON-TE-ZA-4100, SDR-2-CON-TE-ZA-4060, SDR-2-CON-TE-ZA-4070, SDR-2-CON-TE-ZA-4080, SDR-2-CON-TE-ZA-4110, SDR-2-CON-TE-ZA-4120, SDR-2-CON-TE-ZA-4130, SDR-2-CON-TE-ZA-4180, SDR-2-CON-TE-ZA-4140, SDR-2-CON-TE-ZA-4190, SDR-2-CON-TE-ZA-4150, SDR-2-CON-TE-ZA-4160, SDR-2-CON-TE-ZA-4170, SDR-2-CON-SL-ZA-3230, SDR-2-CON-SL-ZA-3240, SDR-2-CON-SL-ZA-3260, SDR-2-CON-SL-ZA-3250, SDR-2-CON-SL-ZA-3270, SDR-2-CON-SL-ZA-3280, SDR-2-CON-SL-ZA-3300, SDR-2-CON-SL-ZA-3290, SDR-2-CON-SL-ZA-3310, SDR-2-CON-SL-ZA-3320, SDR-2-CON-SL-ZA-3340, SDR-2-CON-SL-ZA-3330, SDR-2-CON-SL-ZA-3350, SDR-2-CON-SL-ZA-3360, SDR-2-CON-SL-ZA-3380, SDR-2-CON-SL-ZA-3370, SDR-2-CON-SL-ZA-3390, SDR-2-CON-SL-ZA-3400, SDR-2-CON-SL-ZA-3420, SDR-2-CON-SL-ZA-3410, SDR-2-CON-SL-ZA-3430, SDR-2-CON-SL-ZA-3440, SDR-2-CON-SL-ZA-3450, SDR-2-CON-SL-ZA-3460, SDR-2-CON-SL-ZA-3470, SDR-2-CON-SL-ZA-3480, SDR-2-CON-SL-ZA-3490, SDR-2-CON-SL-ZA-3500, SDR-2-CON-SL-ZA-3510, SDR-2-CON-SL-ZA-3520, SDR-2-CON-SL-ZA-3530, SDR-2-CON-SL-ZA-3540, SDR-2-CON-SL-ZA-3550, SDR-2-CON-SL-ZA-3560, SDR-2-CON-SL-ZA-3570, SDR-2-CON-SL-ZA-3580, SDR-2-CON-MV-ZA-1280, SDR-2-CON-MV-ZA-1290, SDR-2-CON-MV-ZA-1310, SDR-2-CON-MV-ZA-1300, SDR-2-CON-MV-ZA-1320, SDR-2-CON-MV-ZA-1330, SDR-2-CON-MV-ZA-1350, SDR-2-CON-MV-ZA-1340, SDR-2-CON-TE-ZA-4200, SDR-2-CON-TE-ZA-4210, SDR-2-CON-TE-ZA-4220, SDR-2-CON-TE-ZA-4270, SDR-2-CON-TE-ZA-4230, SDR-2-CON-TE-ZA-4280, SDR-2-CON-TE-ZA-4240, SDR-2-CON-TE-ZA-4250, SDR-2-CON-TE-ZA-4260, SDR-2-CON-TE-ZA-4290, SDR-2-CON-TE-ZA-4300, SDR-2-CON-TE-ZA-4310, SDR-2-CON-TE-ZA-4360, SDR-2-CON-TE-ZA-4320, SDR-2-CON-TE-ZA-4370, SDR-2-CON-TE-ZA-4330, SDR-2-CON-TE-ZA-4340, SDR-2-CON-TE-ZA-4350, SDR-2-CON-TE-ZA-4380, SDR-2-CON-TE-ZA-4390, SDR-2-CON-TE-ZA-4400, SDR-2-CON-TE-ZA-4450, SDR-2-CON-TE-ZA-4410, SDR-2-CON-TE-ZA-4460, SDR-2-CON-TE-ZA-4420, SDR-2-CON-TE-ZA-4430, SDR-2-CON-TE-ZA-4440, SDR-2-CON-TE-ZA-4470, SDR-2-CON-TE-ZA-4480, SDR-2-CON-TE-ZA-4490, SDR-2-CON-TE-ZA-4540, SDR-2-CON-TE-ZA-4500, SDR-2-CON-TE-ZA-4550, SDR-2-CON-TE-ZA-4510, SDR-2-CON-TE-ZA-4520, SDR-2-CON-TE-ZA-4530, SDR-2-CON-CC-ZA-1000, SDR-2-CON-CC-ZA-1030, SDR-2-CON-CC-ZA-1050, SDR-2-CON-CC-ZA-1060, SDR-2-CON-CC-ZA-1080, SDR-2-CON-CC-ZA-1090, SDR-2-CON-CC-ZA-1100, SDR-2-CON-CC-ZA-1110, SDR-2-CON-CC-ZA-1240, SDR-2-CON-CC-ZA-1250, SDR-2-CON-CC-ZA-1260, SDR-2-CON-CC-ZA-1270, SDR-2-CON-CC-ZA-1380, SDR-2-CON-CC-ZA-1390, SDR-2-CON-CC-ZA-1400, SDR-2-CON-CC-ZA-1410, SDR-2-CON-CC-ZA-1500, SDR-2-CON-CC-ZA-1510, SDR-2-CON-CC-ZA-1520, SDR-2-CON-CC-ZA-1530, SDR-2-CON-CC-ZA-1540, SDR-2-CON-CC-ZA-1550, SDR-2-CON-CC-ZA-1560, SDR-2-CON-CC-ZA-1570, SDR-2-CON-CC-ZA-1580, SDR-2-CON-CC-ZA-1590, SDR-2-CON-CC-ZA-1600, SDR-2-CON-CC-ZA-1610, SDR-2-CON-CC-ZA-1620, SDR-2-CON-CC-ZA-1630, SDR-2-CON-CC-ZA-1640, SDR-2-CON-CC-ZA-1650, SDR-2-CON-CC-ZA-1660, SDR-2-CON-CC-ZA-1670, SDR-2-CON-CC-ZA-1700, SDR-2-CON-CC-ZA-1720, SDR-2-CON-CC-ZA-1730, SDR-2-CON-CC-ZA-1750, SDR-2-CON-CC-ZA-1760, SDR-2-CON-CC-ZA-1770, SDR-2-CON-CC-ZA-1780, SDR-2-CON-CC-ZA-1790, SDR-2-CON-CC-ZA-1800, SDR-2-CON-CC-ZA-1810, SDR-2-CON-CC-ZA-1820, SDR-2-CON-CC-ZA-1830, SDR-2-CON-CC-ZA-1840, SDR-2-CON-CC-ZA-1850, SDR-2-CON-CC-ZA-1860, SDR-2-CON-CC-ZG-1500, SDR-2-CON-CC-ZG-1540, SDR-2-CON-CC-ZG-1550, SDR-2-CON-CC-ZG-1510, SDR-2-CON-CC-ZG-1560, SDR-2-CON-CC-ZG-1570, SDR-2-CON-CC-ZG-1580, SDR-2-CON-CC-ZG-1520, SDR-2-CON-CC-ZG-1590, SDR-2-CON-CC-ZG-1530, SDR-2-CON-CC-ZG-1600, SDR-2-CON-CC-ZG-1610, SDR-2-CON-CC-ZG-1620, SDR-2-CON-CC-ZG-1630, SDR-2-CON-CC-ZG-1640, SDR-2-CON-CC-ZG-1650, SDR-2-CON-CC-ZG-1660, SDR-2-CON-RW-ZA-1720, SDR-2-CON-RW-ZA-1720 FF, SDR-2-CON-ST-ZA-6120, SDR-2-CON-SE-ZA-2690 → SDR-2-CON-SE-ZA-1490, SDR-2-CON-SE-ZA-1550, SDR-2-CON-SE-ZA-1560, SDR-2-CON-SE-ZA-1620, SDR-2-CON-SE-ZA-1590, SDR-2-CON-SE-ZA-1650, SDR-2-CON-SE-ZA-1660, SDR-2-CON-SE-ZA-1720, SDR-2-CON-SE-ZA-1690, SDR-2-CON-SE-ZA-1750, SDR-2-CON-SE-ZA-1760, SDR-2-CON-SE-ZA-1820, SDR-2-CON-SE-ZA-1790, SDR-2-CON-SE-ZA-1850, SDR-2-CON-SE-ZA-1860, SDR-2-CON-SE-ZA-1920, SDR-2-CON-SE-ZA-1890, SDR-2-CON-SE-ZA-1950, SDR-2-CON-SE-ZA-1960, SDR-2-CON-SE-ZA-2020, SDR-2-CON-SE-ZA-1990, SDR-2-CON-SE-ZA-2050, SDR-2-CON-SE-ZA-2060, SDR-2-CON-SE-ZA-2120, SDR-2-CON-SE-ZA-2070, SDR-2-CON-SE-ZA-2080, SDR-2-CON-SE-ZA-2130, SDR-2-CON-SE-ZA-2090, SDR-2-CON-SE-ZA-2150, SDR-2-CON-SE-ZA-2100, SDR-2-CON-SE-ZA-2140, SDR-2-CON-SE-ZA-2160, SDR-2-CON-SE-ZA-2220, SDR-2-CON-SE-ZA-2170, SDR-2-CON-SE-ZA-2230, SDR-2-CON-SE-ZA-2190, SDR-2-CON-SE-ZA-2250, SDR-2-CON-SE-ZA-2200, SDR-2-CON-SE-ZA-2240, SDR-2-CON-SE-ZA-2260, SDR-2-CON-SE-ZA-2320, SDR-2-CON-SE-ZA-2270, SDR-2-CON-SE-ZA-2280, SDR-2-CON-SE-ZA-2330, SDR-2-CON-SE-ZA-2290, SDR-2-CON-SE-ZA-2350, SDR-2-CON-SE-ZA-2300, SDR-2-CON-SE-ZA-2340, SDR-2-CON-SE-ZA-2360, SDR-2-CON-SE-ZA-2420, SDR-2-CON-SE-ZA-2370, SDR-2-CON-SE-ZA-2380, SDR-2-CON-SE-ZA-2430, SDR-2-CON-SE-ZA-2390, SDR-2-CON-SE-ZA-2450, SDR-2-CON-SE-ZA-2400, SDR-2-CON-SE-ZA-2440, SDR-2-CON-PW-ZG-1000, SDR-2-CON-PW-ZA-2910, SDR-2-CON-PW-ZA-3010, SDR-2-CON-PW-ZA-3020, SDR-2-CON-PW-ZA-3110, SDR-2-CON-PW-ZA-3120, SDR-2-CON-PW-ZA-2560, SDR-2-CON-TE-ZA-4290, SDR-2-CON-RW-ZA-1720, SDR-2-CON-RW-ZA-1720 FF, SDR-2-CON-ST-ZA-6120, SDR-2-CON-SE-ZA-1010 FF, SDR-2-CON-SE-ZA-1020 FF, SDR-2-CON-SE-ZA-1040 FF, SDR-2-CON-SE-ZA-1050 FF, SDR-2-CON-SE-ZA-1470 FF, SDR-2-CON-SE-ZA-1480 FF, SDR-2-CON-SE-ZA-1500 FF, SDR-2-CON-SE-ZA-1510 FF, SDR-2-CON-SE-ZA-1570 FF, SDR-2-CON-SE-ZA-1580 FF, SDR-2-CON-SE-ZA-1600 FF, SDR-2-CON-SE-ZA-1610 FF, SDR-2-CON-SE-ZA-1670 FF, SDR-2-CON-SE-ZA-1680 FF, SDR-2-CON-SE-ZA-1700 FF, SDR-2-CON-SE-ZA-1710 FF, SDR-2-CON-SE-ZA-1770 FF, SDR-2-CON-SE-ZA-1780 FF, SDR-2-CON-SE-ZA-1800 FF, SDR-2-CON-SE-ZA-1810 FF, SDR-2-CON-SE-ZA-1870 FF, SDR-2-CON-SE-ZA-1880 FF, SDR-2-CON-SE-ZA-1900 FF, SDR-2-CON-SE-ZA-1910 FF, SDR-2-CON-SE-ZA-1970 FF, SDR-2-CON-SE-ZA-2000 FF, SDR-2-CON-SE-ZA-2110 FF, SDR-2-CON-SE-ZA-2180 FF, SDR-2-CON-SE-ZA-2210 FF, SDR-2-CON-SE-ZA-2310 FF, SDR-2-CON-SE-ZA-2410 FF, SDR-2-CON-TS-ZA-1000 FF, SDR-2-CON-TS-ZA-3100 FF, SDR-2-CON-TS-ZA-3130 FF, SDR-2-CON-TS-ZA-3110 FF, SDR-2-CON-TS-ZA-3120 FF, SDR-2-CON-TS-ZA-3140 FF, SDR-2-CON-TS-ZA-2300 FF, SDR-2-CON-TS-ZA-2380 FF, SDR-2-CON-TS-ZA-2310 FF, SDR-2-CON-TS-ZA-2400 FF, SDR-2-CON-TS-ZA-2900 FF, SDR-2-CON-TS-ZA-3000 FF, SDR-2-CON-TS-ZA-2500 FF, SDR-2-CON-PW-ZA-1000 FF, SDR-2-CON-PW-ZA-2200 FF, SDR-2-CON-PW-ZA-1010 FF, SDR-2-CON-PW-ZA-2260 FF, SDR-2-CON-PW-ZA-2340 FF, SDR-2-CON-PW-ZA-2270 FF, SDR-2-CON-PW-ZA-2330 FF, SDR-2-CON-PW-ZA-2350 FF, SDR-2-CON-PW-ZG-1500 FF, SDR-2-CON-PW-ZG-1010 FF, SDR-2-CON-PW-ZA-2940 FF, SDR-2-CON-PW-ZA-2920 FF, SDR-2-CON-PW-ZA-3040 FF, SDR-2-CON-PW-ZA-3140 FF, SDR-2-CON-PW-ZA-2640 FF, SDR-2-CON-PW-ZA-2570 FF, SDR-2-CON-SL-ZA-1000 FF, SDR-2-CON-SL-ZA-1010 FF, SDR-2-CON-SL-ZA-2870 FF, SDR-2-CON-SL-ZA-2880 FF, SDR-2-CON-SL-ZA-1300 FF, SDR-2-CON-SL-ZA-1310 FF, SDR-2-CON-SL-ZA-2950 FF, SDR-2-CON-SL-ZA-2960 FF, SDR-2-CON-SL-ZA-2990 FF, SDR-2-CON-SL-ZA-3000 FF, SDR-2-CON-SL-ZA-3030 FF, SDR-2-CON-SL-ZA-3040 FF, SDR-2-CON-SL-ZA-3070 FF, SDR-2-CON-SL-ZA-3080 FF, SDR-2-CON-SL-ZA-3110 FF, SDR-2-CON-SL-ZA-3120 FF, SDR-2-CON-SL-ZA-3150 FF, SDR-2-CON-SL-ZA-3160 FF, SDR-2-CON-SL-ZA-3190 FF, SDR-2-CON-SL-ZA-3200 FF, SDR-2-CON-SL-ZA-2910 FF, SDR-2-CON-SL-ZA-2920 FF, SDR-2-CON-MV-ZA-1000 FF, SDR-2-CON-MV-ZA-1070 FF, SDR-2-CON-MV-ZA-1150 FF, SDR-2-CON-MV-ZA-1160 FF, SDR-2-CON-MV-ZA-1170 FF, SDR-2-CON-MV-ZA-1200 FF, SDR-2-CON-MV-ZA-1210 FF, SDR-2-CON-MV-ZA-1240 FF, SDR-2-CON-MV-ZA-1250 FF, SDR-2-CON-TE-ZA-1030 FF, SDR-2-CON-TE-ZA-1850 FF, SDR-2-CON-TE-ZA-3210 FF, SDR-2-CON-TE-ZA-3220 FF, SDR-2-CON-TE-ZA-3230 FF, SDR-2-CON-TE-ZA-3240 FF, SDR-2-CON-TE-ZA-3290 FF, SDR-2-CON-TE-ZA-3250 FF, SDR-2-CON-TE-ZA-3300 FF, SDR-2-CON-TE-ZA-3330 FF, SDR-2-CON-TE-ZA-3390 FF, SDR-2-CON-TE-ZA-3420 FF, SDR-2-CON-TE-ZA-3480 FF, SDR-2-CON-TE-ZA-3490 FF, SDR-2-CON-TE-ZA-3510 FF, SDR-2-CON-TE-ZA-3560 FF, SDR-2-CON-TE-ZA-3570 FF, SDR-2-CON-TE-ZA-3580 FF, SDR-2-CON-TE-ZA-3600 FF, SDR-2-CON-TE-ZA-3650 FF, SDR-2-CON-TE-ZA-3660 FF, SDR-2-CON-TE-ZA-3670 FF, SDR-2-CON-TE-ZA-3750 FF, SDR-2-CON-TE-ZA-3760 FF, SDR-2-CON-TE-ZA-3840 FF, SDR-2-CON-TE-ZA-3850 FF, SDR-2-CON-TE-ZA-3930 FF, SDR-2-CON-TE-ZA-4020 FF, SDR-2-CON-TE-ZA-4110 FF, SDR-2-CON-TE-ZA-4120 FF, SDR-2-CON-TE-ZA-4140 FF, SDR-2-CON-TE-ZA-4190 FF, SDR-2-CON-TE-ZA-4150 FF, SDR-2-CON-SL-ZA-3230 FF, SDR-2-CON-SL-ZA-3240 FF, SDR-2-CON-SL-ZA-3270 FF, SDR-2-CON-SL-ZA-3280 FF, SDR-2-CON-SL-ZA-3310 FF, SDR-2-CON-SL-ZA-3320 FF, SDR-2-CON-SL-ZA-3350 FF, SDR-2-CON-SL-ZA-3360 FF, SDR-2-CON-SL-ZA-3390 FF, SDR-2-CON-SL-ZA-3400 FF, SDR-2-CON-SL-ZA-3420 FF, SDR-2-CON-SL-ZA-3410 FF, SDR-2-CON-MV-ZA-1280 FF, SDR-2-CON-MV-ZA-1290 FF, SDR-2-CON-MV-ZA-1310 FF, SDR-2-CON-MV-ZA-1320 FF, SDR-2-CON-MV-ZA-1330 FF, SDR-2-CON-MV-ZA-1350 FF, SDR-2-CON-TE-ZA-4200 FF, SDR-2-CON-TE-ZA-4210 FF, SDR-2-CON-TE-ZA-4230 FF, SDR-2-CON-TE-ZA-4280 FF, SDR-2-CON-TE-ZA-4240 FF, SDR-2-CON-TE-ZA-4250 FF, SDR-2-CON-TE-ZA-4300 FF, SDR-2-CON-TE-ZA-4310 FF, SDR-2-CON-TE-ZA-4360 FF, SDR-2-CON-TE-ZA-4320 FF, SDR-2-CON-TE-ZA-4370 FF, SDR-2-CON-TE-ZA-4330 FF, SDR-2-CON-TE-ZA-4380 FF, SDR-2-CON-TE-ZA-4390 FF, SDR-2-CON-TE-ZA-4400 FF, SDR-2-CON-TE-ZA-4450 FF, SDR-2-CON-TE-ZA-4410 FF, SDR-2-CON-TE-ZA-4460 FF, SDR-2-CON-TE-ZA-4420 FF, SDR-2-CON-TE-ZA-4470 FF, SDR-2-CON-TE-ZA-4480 FF, SDR-2-CON-TE-ZA-4490 FF, SDR-2-CON-TE-ZA-4540 FF, SDR-2-CON-TE-ZA-4500 FF, SDR-2-CON-TE-ZA-4550 FF, SDR-2-CON-TE-ZA-4510 FF, SDR-2-CON-CC-ZA-1000 FF, SDR-2-CON-CC-ZA-1030 FF, SDR-2-CON-CC-ZA-1080 FF, SDR-2-CON-CC-ZA-1090 FF, SDR-2-CON-CC-ZA-1240 FF, SDR-2-CON-CC-ZA-1250 FF, SDR-2-CON-CC-ZA-1380 FF, SDR-2-CON-CC-ZA-1390 FF, SDR-2-CON-CC-ZA-1670 FF, SDR-2-CON-CC-ZA-1700 FF, SDR-2-CON-CC-ZA-1750 FF, SDR-2-CON-CC-ZA-1790 FF, SDR-2-CON-CC-ZA-1830 FF, SDR-2-CON-ST-ZA-4020 FF, SDR-2-CON-SE-ZA-1430 FF, SDR-2-CON-SE-ZA-1440 FF, SDR-2-CON-SE-ZA-1530 FF, SDR-2-CON-SE-ZA-1540 FF, SDR-2-CON-SE-ZA-1630 FF, SDR-2-CON-SE-ZA-1730 FF, SDR-2-CON-SE-ZA-1740 FF, SDR-2-CON-SE-ZA-1830 FF, SDR-2-CON-SE-ZA-1840 FF, SDR-2-CON-SE-ZA-1930 FF, SDR-2-CON-SE-ZA-1940 FF, SDR-2-CON-SE-ZA-1980 FF, SDR-2-CON-SE-ZA-2030 FF, SDR-2-CON-SE-ZA-2010 FF, SDR-2-CON-SE-ZA-2040 FF, SDR-2-CON-TS-ZA-1900 FF, SDR-2-CON-TS-ZA-1010 FF, SDR-2-CON-TS-ZA-1080 FF, SDR-2-CON-TS-ZA-1910 FF, SDR-2-CON-TS-ZA-1040 FF, SDR-2-CON-TS-ZA-1020 FF, SDR-2-CON-TS-ZA-1050 FF, SDR-2-CON-TS-ZA-1060 FF, SDR-2-CON-TS-ZA-1070 FF, SDR-2-CON-TS-ZA-2200 FF, SDR-2-CON-TS-ZA-2280 FF, SDR-2-CON-TS-ZA-2210 FF, SDR-2-CON-TS-ZA-2270 FF, SDR-2-CON-TS-ZA-2290 FF, SDR-2-CON-TS-ZA-2230 FF, SDR-2-CON-TS-ZA-2240 FF, SDR-2-CON-TS-ZA-2250 FF, SDR-2-CON-TS-ZA-2260 FF, SDR-2-CON-TS-ZA-1180 FF, SDR-2-CON-TS-ZA-1920 FF, SDR-2-CON-TS-ZA-1190 FF, SDR-2-CON-TS-ZA-1260 FF, SDR-2-CON-TS-ZA-1930 FF, SDR-2-CON-TS-ZA-2010 FF, SDR-2-CON-TS-ZA-2000 FF, SDR-2-CON-TS-ZA-2020 FF, SDR-2-CON-TS-ZA-2030 FF, SDR-2-CON-TS-ZA-2040 FF, SDR-2-CON-TS-ZA-1270 FF, SDR-2-CON-TS-ZA-1940 FF, SDR-2-CON-TS-ZA-1280 FF, SDR-2-CON-TS-ZA-1350 FF, SDR-2-CON-TS-ZA-1950 FF, SDR-2-CON-TS-ZA-2060 FF, SDR-2-CON-TS-ZA-2050 FF, SDR-2-CON-TS-ZA-2070 FF, SDR-2-CON-TS-ZA-2080 FF, SDR-2-CON-TS-ZA-2090 FF, SDR-2-CON-TS-ZA-2600 FF, SDR-2-CON-TS-ZA-2630 FF, SDR-2-CON-TS-ZA-2610 FF, SDR-2-CON-TS-ZA-2620 FF, SDR-2-CON-TS-ZA-2640 FF, SDR-2-CON-TS-ZA-2660 FF, SDR-2-CON-TS-ZA-2650 FF, SDR-2-CON-TS-ZA-2670 FF, SDR-2-CON-TS-ZA-2680 FF, SDR-2-CON-TS-ZA-2690 FF, SDR-2-CON-TS-ZA-2700 FF, SDR-2-CON-TS-ZA-2730 FF, SDR-2-CON-TS-ZA-2710 FF, SDR-2-CON-TS-ZA-2720 FF, SDR-2-CON-TS-ZA-2740 FF, SDR-2-CON-TS-ZA-2760 FF, SDR-2-CON-TS-ZA-2750 FF, SDR-2-CON-TS-ZA-2770 FF, SDR-2-CON-TS-ZA-2780 FF, SDR-2-CON-TS-ZA-2800 FF, SDR-2-CON-TS-ZA-2830 FF, SDR-2-CON-TS-ZA-2810 FF, SDR-2-CON-TS-ZA-2820 FF, SDR-2-CON-TS-ZA-2840 FF, SDR-2-CON-TS-ZA-2860 FF, SDR-2-CON-TS-ZA-2850 FF, SDR-2-CON-TS-ZA-2870 FF, SDR-2-CON-TS-ZA-2880 FF, SDR-2-CON-TS-ZA-2890 FF, SDR-2-CON-TS-ZA-1630 FF, SDR-2-CON-TS-ZA-1960 FF, SDR-2-CON-TS-ZA-1640 FF, SDR-2-CON-TS-ZA-1710 FF, SDR-2-CON-TS-ZA-1970 FF, SDR-2-CON-TS-ZA-2110 FF, SDR-2-CON-TS-ZA-2100 FF, SDR-2-CON-TS-ZA-2120 FF, SDR-2-CON-TS-ZA-2130 FF, SDR-2-CON-TS-ZA-2140 FF, SDR-2-CON-TS-ZA-1720 FF, SDR-2-CON-TS-ZA-1980 FF, SDR-2-CON-TS-ZA-1730 FF, SDR-2-CON-TS-ZA-1800 FF, SDR-2-CON-TS-ZA-1990 FF, SDR-2-CON-TS-ZA-2160 FF, SDR-2-CON-TS-ZA-2150 FF, SDR-2-CON-TS-ZA-2170 FF, SDR-2-CON-TS-ZA-2180 FF, SDR-2-CON-TS-ZA-2190 FF, SDR-2-CON-TS-ZA-3160 FF, SDR-2-CON-TS-ZA-3150 FF, SDR-2-CON-TS-ZA-3170 FF, SDR-2-CON-TS-ZA-3180 FF, SDR-2-CON-TS-ZA-3190 FF, SDR-2-CON-TS-ZA-2370 FF, SDR-2-CON-TS-ZA-2390 FF, SDR-2-CON-TS-ZA-2330 FF, SDR-2-CON-TS-ZA-2320 FF, SDR-2-CON-TS-ZA-2340 FF, SDR-2-CON-TS-ZA-2350 FF, SDR-2-CON-TS-ZA-2360 FF, SDR-2-CON-TS-ZA-2430 FF, SDR-2-CON-TS-ZA-2410 FF, SDR-2-CON-TS-ZA-2420 FF, SDR-2-CON-TS-ZA-2440 FF, SDR-2-CON-TS-ZA-2460 FF, SDR-2-CON-TS-ZA-2450 FF, SDR-2-CON-TS-ZA-2470 FF, SDR-2-CON-TS-ZA-2480 FF, SDR-2-CON-TS-ZA-2490 FF, SDR-2-CON-TS-ZA-2930 FF, SDR-2-CON-TS-ZA-2910 FF, SDR-2-CON-TS-ZA-2920 FF, SDR-2-CON-TS-ZA-2940 FF, SDR-2-CON-TS-ZA-2960 FF, SDR-2-CON-TS-ZA-2950 FF, SDR-2-CON-TS-ZA-2970 FF, SDR-2-CON-TS-ZA-2980 FF, SDR-2-CON-TS-ZA-2990 FF, SDR-2-CON-TS-ZA-3030 FF, SDR-2-CON-TS-ZA-3010 FF, SDR-2-CON-TS-ZA-3020 FF, SDR-2-CON-TS-ZA-3040 FF, SDR-2-CON-TS-ZA-3060 FF, SDR-2-CON-TS-ZA-3050 FF, SDR-2-CON-TS-ZA-3080 FF, SDR-2-CON-TS-ZA-3090 FF, SDR-2-CON-TS-ZA-2530 FF, SDR-2-CON-TS-ZA-2510 FF, SDR-2-CON-TS-ZA-2520 FF, SDR-2-CON-TS-ZA-2560 FF, SDR-2-CON-TS-ZA-2550 FF, SDR-2-CON-TS-ZA-2570 FF, SDR-2-CON-TS-ZA-2580 FF, SDR-2-CON-TS-ZA-2590 FF, SDR-2-CON-PW-ZA-1080 FF, SDR-2-CON-PW-ZA-2210 FF, SDR-2-CON-PW-ZA-1040 FF, SDR-2-CON-PW-ZA-1020 FF, SDR-2-CON-PW-ZA-1050 FF, SDR-2-CON-PW-ZA-1030 FF, SDR-2-CON-PW-ZA-1070 FF, SDR-2-CON-PW-ZA-2300 FF, SDR-2-CON-PW-ZA-2280 FF, SDR-2-CON-PW-ZA-2310 FF, SDR-2-CON-PW-ZA-2290 FF, SDR-2-CON-PW-ZA-1200 FF, SDR-2-CON-PW-ZA-2220 FF, SDR-2-CON-PW-ZA-1210 FF, SDR-2-CON-PW-ZA-1280 FF, SDR-2-CON-PW-ZA-2230 FF, SDR-2-CON-PW-ZA-2680 FF, SDR-2-CON-PW-ZA-2660 FF, SDR-2-CON-PW-ZA-2690 FF, SDR-2-CON-PW-ZA-2670 FF, SDR-2-CON-PW-ZA-2700 FF, SDR-2-CON-PW-ZA-2710 FF, SDR-2-CON-PW-ZA-2740 FF, SDR-2-CON-PW-ZA-2720 FF, SDR-2-CON-PW-ZA-2730 FF, SDR-2-CON-PW-ZA-2750 FF, SDR-2-CON-PW-ZA-2780 FF, SDR-2-CON-PW-ZA-2760 FF, SDR-2-CON-PW-ZA-2790 FF, SDR-2-CON-PW-ZA-2770 FF, SDR-2-CON-PW-ZA-2800 FF, SDR-2-CON-PW-ZA-1400 FF, SDR-2-CON-PW-ZA-2240 FF, SDR-2-CON-PW-ZA-1410 FF, SDR-2-CON-PW-ZA-1480 FF, SDR-2-CON-PW-ZA-2250 FF, SDR-2-CON-PW-ZA-3230 FF, SDR-2-CON-PW-ZA-3210 FF, SDR-2-CON-PW-ZA-3240 FF, SDR-2-CON-PW-ZA-3220 FF, SDR-2-CON-PW-ZA-3250 FF, SDR-2-CON-PW-ZA-3260 FF, SDR-2-CON-PW-ZA-3290 FF, SDR-2-CON-PW-ZA-3270 FF, SDR-2-CON-PW-ZA-3280 FF, SDR-2-CON-PW-ZA-3300 FF, SDR-2-CON-PW-ZA-3330 FF, SDR-2-CON-PW-ZA-3310 FF, SDR-2-CON-PW-ZA-3340 FF, SDR-2-CON-PW-ZA-3320 FF, SDR-2-CON-PW-ZA-3350 FF, SDR-2-CON-PW-ZA-3360 FF, SDR-2-CON-PW-ZA-3390 FF, SDR-2-CON-PW-ZA-3370 FF, SDR-2-CON-PW-ZA-3380 FF, SDR-2-CON-PW-ZA-3400 FF, SDR-2-CON-PW-ZA-3430 FF, SDR-2-CON-PW-ZA-3410 FF, SDR-2-CON-PW-ZA-3440 FF, SDR-2-CON-PW-ZA-3420 FF, SDR-2-CON-PW-ZA-3450 FF, SDR-2-CON-PW-ZA-3460 FF, SDR-2-CON-PW-ZA-3490 FF, SDR-2-CON-PW-ZA-3470 FF, SDR-2-CON-PW-ZA-3480 FF, SDR-2-CON-PW-ZA-3500 FF, SDR-2-CON-PW-ZA-3530 FF, SDR-2-CON-PW-ZA-3510 FF, SDR-2-CON-PW-ZA-3540 FF, SDR-2-CON-PW-ZA-3520 FF, SDR-2-CON-PW-ZA-3550 FF, SDR-2-CON-PW-ZA-3560 FF, SDR-2-CON-PW-ZA-3590 FF, SDR-2-CON-PW-ZA-3570 FF, SDR-2-CON-PW-ZA-3580 FF, SDR-2-CON-PW-ZA-3600 FF, SDR-2-CON-PW-ZA-3630 FF, SDR-2-CON-PW-ZA-3610 FF, SDR-2-CON-PW-ZA-3640 FF, SDR-2-CON-PW-ZA-3620 FF, SDR-2-CON-PW-ZA-3650 FF, SDR-2-CON-PW-ZA-2810 FF, SDR-2-CON-PW-ZA-2840 FF, SDR-2-CON-PW-ZA-2820 FF, SDR-2-CON-PW-ZA-2830 FF, SDR-2-CON-PW-ZA-2850 FF, SDR-2-CON-PW-ZA-2880 FF, SDR-2-CON-PW-ZA-2860 FF, SDR-2-CON-PW-ZA-2890 FF, SDR-2-CON-PW-ZA-2870 FF, SDR-2-CON-PW-ZA-2900 FF, SDR-2-CON-PW-ZA-2360 FF, SDR-2-CON-PW-ZA-2440 FF, SDR-2-CON-PW-ZA-2370 FF, SDR-2-CON-PW-ZA-2430 FF, SDR-2-CON-PW-ZA-2450 FF, SDR-2-CON-PW-ZA-2400 FF, SDR-2-CON-PW-ZA-2380 FF, SDR-2-CON-PW-ZA-2410 FF, SDR-2-CON-PW-ZA-2390 FF, SDR-2-CON-PW-ZA-2420 FF, SDR-2-CON-PW-ZA-2460 FF, SDR-2-CON-PW-ZA-2540 FF, SDR-2-CON-PW-ZA-2470 FF, SDR-2-CON-PW-ZA-2530 FF, SDR-2-CON-PW-ZA-2550 FF, SDR-2-CON-PW-ZA-2500 FF, SDR-2-CON-PW-ZA-2480 FF, SDR-2-CON-PW-ZA-2510 FF, SDR-2-CON-PW-ZA-2490 FF, SDR-2-CON-PW-ZA-2520 FF, SDR-2-CON-PW-ZG-1080 FF, SDR-2-CON-PW-ZG-1510 FF, SDR-2-CON-PW-ZA-3680 FF, SDR-2-CON-PW-ZA-3660 FF, SDR-2-CON-PW-ZA-3690 FF, SDR-2-CON-PW-ZA-3670 FF, SDR-2-CON-PW-ZA-3700 FF, SDR-2-CON-PW-ZA-2930 FF, SDR-2-CON-PW-ZA-2950 FF, SDR-2-CON-PW-ZA-2980 FF, SDR-2-CON-PW-ZA-2960 FF, SDR-2-CON-PW-ZA-2990 FF, SDR-2-CON-PW-ZA-2970 FF, SDR-2-CON-PW-ZA-3030 FF, SDR-2-CON-PW-ZA-3050 FF, SDR-2-CON-PW-ZA-3080 FF, SDR-2-CON-PW-ZA-3060 FF, SDR-2-CON-PW-ZA-3090 FF, SDR-2-CON-PW-ZA-3070 FF, SDR-2-CON-PW-ZA-3100 FF, SDR-2-CON-PW-ZA-3130 FF, SDR-2-CON-PW-ZA-3150 FF, SDR-2-CON-PW-ZA-3180 FF, SDR-2-CON-PW-ZA-3160 FF, SDR-2-CON-PW-ZA-3190 FF, SDR-2-CON-PW-ZA-3170 FF, SDR-2-CON-PW-ZA-3200 FF, SDR-2-CON-PW-ZA-2630 FF, SDR-2-CON-PW-ZA-2650 FF, SDR-2-CON-PW-ZA-2600 FF, SDR-2-CON-PW-ZA-2580 FF, SDR-2-CON-PW-ZA-2610 FF, SDR-2-CON-PW-ZA-2590 FF, SDR-2-CON-PW-ZA-2620 FF, SDR-2-CON-SL-ZA-1110 FF, SDR-2-CON-SL-ZA-1100 FF, SDR-2-CON-SL-ZA-2900 FF, SDR-2-CON-SL-ZA-2890 FF, SDR-2-CON-SL-ZA-1410 FF, SDR-2-CON-SL-ZA-1400 FF, SDR-2-CON-SL-ZA-2980 FF, SDR-2-CON-SL-ZA-2970 FF, SDR-2-CON-SL-ZA-3020 FF, SDR-2-CON-SL-ZA-3010 FF, SDR-2-CON-SL-ZA-3060 FF, SDR-2-CON-SL-ZA-3050 FF, SDR-2-CON-SL-ZA-3100 FF, SDR-2-CON-SL-ZA-3090 FF, SDR-2-CON-SL-ZA-3140 FF, SDR-2-CON-SL-ZA-3130 FF, SDR-2-CON-SL-ZA-3180 FF, SDR-2-CON-SL-ZA-3170 FF, SDR-2-CON-SL-ZA-3220 FF, SDR-2-CON-SL-ZA-3210 FF, SDR-2-CON-SL-ZA-2940 FF, SDR-2-CON-SL-ZA-2930 FF, SDR-2-CON-SL-ZA-2650 FF, SDR-2-CON-SL-ZA-2760 FF, SDR-2-CON-SL-ZA-2770 FF, SDR-2-CON-SL-ZA-2780 FF, SDR-2-CON-SL-ZA-2660 FF, SDR-2-CON-SL-ZA-2790 FF, SDR-2-CON-SL-ZA-2800 FF, SDR-2-CON-SL-ZA-2670 FF, SDR-2-CON-SL-ZA-2810 FF, SDR-2-CON-SL-ZA-2820 FF, SDR-2-CON-SL-ZA-2680 FF, SDR-2-CON-SL-ZA-2830 FF, SDR-2-CON-SL-ZA-2840 FF, SDR-2-CON-SL-ZA-2690 FF, SDR-2-CON-SL-ZA-2850 FF, SDR-2-CON-SL-ZA-2860 FF, SDR-2-CON-MV-ZA-1100 FF, SDR-2-CON-MV-ZA-1190 FF, SDR-2-CON-MV-ZA-1180 FF, SDR-2-CON-MV-ZA-1230 FF, SDR-2-CON-MV-ZA-1220 FF, SDR-2-CON-MV-ZA-1270 FF, SDR-2-CON-MV-ZA-1260 FF, SDR-2-CON-TE-ZA-1000 FF, SDR-2-CON-TE-ZA-1010 FF, SDR-2-CON-TE-ZA-1020 FF, SDR-2-CON-TE-ZA-1840 FF, SDR-2-CON-TE-ZA-1040 FF, SDR-2-CON-TE-ZA-1050 FF, SDR-2-CON-TE-ZA-1060 FF, SDR-2-CON-TE-ZA-3280 FF, SDR-2-CON-TE-ZA-3260 FF, SDR-2-CON-TE-ZA-3270 FF, SDR-2-CON-TE-ZA-3310 FF, SDR-2-CON-TE-ZA-3320 FF, SDR-2-CON-TE-ZA-3370 FF, SDR-2-CON-TE-ZA-3380 FF, SDR-2-CON-TE-ZA-3340 FF, SDR-2-CON-TE-ZA-3350 FF, SDR-2-CON-TE-ZA-3360 FF, SDR-2-CON-TE-ZA-3400 FF, SDR-2-CON-TE-ZA-3410 FF, SDR-2-CON-TE-ZA-3460 FF, SDR-2-CON-TE-ZA-3470 FF, SDR-2-CON-TE-ZA-3430 FF, SDR-2-CON-TE-ZA-3440 FF, SDR-2-CON-TE-ZA-3450 FF, SDR-2-CON-TE-ZA-3500 FF, SDR-2-CON-TE-ZA-3550 FF, SDR-2-CON-TE-ZA-3520 FF, SDR-2-CON-TE-ZA-3530 FF, SDR-2-CON-TE-ZA-3540 FF, SDR-2-CON-TE-ZA-3590 FF, SDR-2-CON-TE-ZA-3640 FF, SDR-2-CON-TE-ZA-3610 FF, SDR-2-CON-TE-ZA-3620 FF, SDR-2-CON-TE-ZA-3630 FF, SDR-2-CON-TE-ZA-3680 FF, SDR-2-CON-TE-ZA-3730 FF, SDR-2-CON-TE-ZA-3690 FF, SDR-2-CON-TE-ZA-3740 FF, SDR-2-CON-TE-ZA-3700 FF, SDR-2-CON-TE-ZA-3710 FF, SDR-2-CON-TE-ZA-3720 FF, SDR-2-CON-TE-ZA-3770 FF, SDR-2-CON-TE-ZA-3820 FF, SDR-2-CON-TE-ZA-3780 FF, SDR-2-CON-TE-ZA-3830 FF, SDR-2-CON-TE-ZA-3790 FF, SDR-2-CON-TE-ZA-3800 FF, SDR-2-CON-TE-ZA-3810 FF, SDR-2-CON-TE-ZA-3860 FF, SDR-2-CON-TE-ZA-3910 FF, SDR-2-CON-TE-ZA-3870 FF, SDR-2-CON-TE-ZA-3920 FF, SDR-2-CON-TE-ZA-3880 FF, SDR-2-CON-TE-ZA-3890 FF, SDR-2-CON-TE-ZA-3900 FF, SDR-2-CON-TE-ZA-3940 FF, SDR-2-CON-TE-ZA-3950 FF, SDR-2-CON-TE-ZA-4000 FF, SDR-2-CON-TE-ZA-3960 FF, SDR-2-CON-TE-ZA-4010 FF, SDR-2-CON-TE-ZA-3970 FF, SDR-2-CON-TE-ZA-3980 FF, SDR-2-CON-TE-ZA-3990 FF, SDR-2-CON-TE-ZA-4030 FF, SDR-2-CON-TE-ZA-4040 FF, SDR-2-CON-TE-ZA-4090 FF, SDR-2-CON-TE-ZA-4050 FF, SDR-2-CON-TE-ZA-4100 FF, SDR-2-CON-TE-ZA-4060 FF, SDR-2-CON-TE-ZA-4070 FF, SDR-2-CON-TE-ZA-4080 FF, SDR-2-CON-TE-ZA-4130 FF, SDR-2-CON-TE-ZA-4180 FF, SDR-2-CON-TE-ZA-4160 FF, SDR-2-CON-TE-ZA-4170 FF, SDR-2-CON-SL-ZA-3260 FF, SDR-2-CON-SL-ZA-3250 FF, SDR-2-CON-SL-ZA-3300 FF, SDR-2-CON-SL-ZA-3290 FF, SDR-2-CON-SL-ZA-3340 FF, SDR-2-CON-SL-ZA-3330 FF, SDR-2-CON-SL-ZA-3380 FF, SDR-2-CON-SL-ZA-3370 FF, SDR-2-CON-SL-ZA-3430 FF, SDR-2-CON-SL-ZA-3440 FF, SDR-2-CON-SL-ZA-3450 FF, SDR-2-CON-SL-ZA-3460 FF, SDR-2-CON-SL-ZA-3470 FF, SDR-2-CON-SL-ZA-3480 FF, SDR-2-CON-SL-ZA-3490 FF, SDR-2-CON-SL-ZA-3500 FF, SDR-2-CON-SL-ZA-3510 FF, SDR-2-CON-SL-ZA-3520 FF, SDR-2-CON-SL-ZA-3530 FF, SDR-2-CON-SL-ZA-3540 FF, SDR-2-CON-SL-ZA-3550 FF, SDR-2-CON-SL-ZA-3560 FF, SDR-2-CON-SL-ZA-3570 FF, SDR-2-CON-SL-ZA-3580 FF, SDR-2-CON-MV-ZA-1300 FF, SDR-2-CON-MV-ZA-1340 FF, SDR-2-CON-TE-ZA-4220 FF, SDR-2-CON-TE-ZA-4270 FF, SDR-2-CON-TE-ZA-4260 FF, SDR-2-CON-TE-ZA-4340 FF, SDR-2-CON-TE-ZA-4350 FF, SDR-2-CON-TE-ZA-4430 FF, SDR-2-CON-TE-ZA-4440 FF, SDR-2-CON-TE-ZA-4520 FF, SDR-2-CON-TE-ZA-4530 FF, SDR-2-CON-CC-ZA-1050 FF, SDR-2-CON-CC-ZA-1060 FF, SDR-2-CON-CC-ZA-1100 FF, SDR-2-CON-CC-ZA-1110 FF, SDR-2-CON-CC-ZA-1260 FF, SDR-2-CON-CC-ZA-1270 FF, SDR-2-CON-CC-ZA-1400 FF, SDR-2-CON-CC-ZA-1410 FF, SDR-2-CON-CC-ZA-1500 FF, SDR-2-CON-CC-ZA-1510 FF, SDR-2-CON-CC-ZA-1520 FF, SDR-2-CON-CC-ZA-1530 FF, SDR-2-CON-CC-ZA-1540 FF, SDR-2-CON-CC-ZA-1550 FF, SDR-2-CON-CC-ZA-1560 FF, SDR-2-CON-CC-ZA-1570 FF, SDR-2-CON-CC-ZA-1580 FF, SDR-2-CON-CC-ZA-1590 FF, SDR-2-CON-CC-ZA-1610 FF, SDR-2-CON-CC-ZA-1620 FF, SDR-2-CON-CC-ZA-1630 FF, SDR-2-CON-CC-ZA-1640 FF, SDR-2-CON-CC-ZA-1650 FF, SDR-2-CON-CC-ZA-1660 FF, SDR-2-CON-CC-ZA-1720 FF, SDR-2-CON-CC-ZA-1730 FF, SDR-2-CON-CC-ZA-1760 FF, SDR-2-CON-CC-ZA-1770 FF, SDR-2-CON-CC-ZA-1780 FF, SDR-2-CON-CC-ZA-1800 FF, SDR-2-CON-CC-ZA-1810 FF, SDR-2-CON-CC-ZA-1820 FF, SDR-2-CON-CC-ZA-1840 FF, SDR-2-CON-CC-ZA-1850 FF, SDR-2-CON-CC-ZA-1860 FF, SDR-2-CON-CC-ZG-1500 FF, SDR-2-CON-CC-ZG-1540 FF, SDR-2-CON-CC-ZG-1550 FF, SDR-2-CON-CC-ZG-1510 FF, SDR-2-CON-CC-ZG-1560 FF, SDR-2-CON-CC-ZG-1570 FF, SDR-2-CON-CC-ZG-1580 FF, SDR-2-CON-CC-ZG-1520 FF, SDR-2-CON-CC-ZG-1590 FF, SDR-2-CON-CC-ZG-1530 FF, SDR-2-CON-CC-ZG-1600 FF, SDR-2-CON-CC-ZG-1610 FF, SDR-2-CON-CC-ZG-1620 FF, SDR-2-CON-CC-ZG-1630 FF, SDR-2-CON-CC-ZG-1640 FF, SDR-2-CON-CC-ZG-1650 FF, SDR-2-CON-CC-ZG-1660 FF, SDR-2-CON-SE-ZA-2690 FF, SDR-2-MILS-1050 FF, SDR-2-CON-ST-ZA-5970 FF, SDR-2-CON-ST-ZA-5220 FF, SDR-2-CON-SE-ZA-1000, SDR-2-CON-SE-ZA-1420, SDR-2-CON-SE-ZA-1030, SDR-2-CON-SE-ZA-1450, SDR-2-CON-SE-ZA-1460, SDR-2-CON-SE-ZA-1520 |  |
| 8 | **install** | 2027-06-05 → 2027-05-08 (-28d) | 2027-06-19 → 2027-05-27 (-23d) |  |  |  |  |
| SDR-2-CON-IR-ZA-1010 | Installation of HDPE Pipe | 2027-06-05 → 2027-05-08 (-28d) | 2027-06-19 → 2027-05-27 (-23d) |  | 0d → 19d |  |  |
| 9 | **Finishing** | 2027-06-20 → 2027-05-29 (-22d) | 2027-06-30 → 2027-06-08 (-22d) |  |  |  |  |
| SDR-2-CON-IR-ZA-1020 | Finishing Works for irrigation | 2027-06-20 → 2027-05-29 (-22d) | 2027-06-30 → 2027-06-08 (-22d) |  | 0d → 19d |  |  |
| 10 | **Repairs** | 2027-07-01 → 2027-06-09 (-22d) | 2027-07-05 → 2027-06-13 (-22d) |  |  |  |  |
| SDR-2-CON-IR-ZA-1030 | Repair for irrigation Works | 2027-07-01 → 2027-06-09 (-22d) | 2027-07-05 → 2027-06-13 (-22d) |  | 0d → 19d |  |  |
| 2 | **IRRIGATION WORKS IN ( PH2-COL-MC20 )** | 2027-05-08 → 2027-05-06 (-2d) | 2027-07-05 → 2027-06-22 (-13d) |  |  |  |  |
| 7 | **Pre install** | 2027-05-08 → 2027-05-06 (-2d) | 2027-06-05 → 2027-06-03 (-2d) |  |  |  |  |
| SDR-2-CON-IR-ZA-2120 | Pre Install for irrigation Works | 2027-05-08 → 2027-05-06 (-2d) | 2027-06-05 → 2027-06-03 (-2d) |  | 0d → 10d |  |  |
| 8 | **install** | 2027-06-06 → 2027-05-24 (-13d) | 2027-06-19 → 2027-06-06 (-13d) |  |  |  |  |
| SDR-2-CON-IR-ZA-2130 | Installation of HDPE Pipe | 2027-06-06 → 2027-05-24 (-13d) | 2027-06-19 → 2027-06-06 (-13d) |  | 0d → 10d | SDR-2-CON-IR-ZA-2120 → SDR-2-CON-IR-ZA-2120 SS+10d |  |
| 9 | **Finishing** | 2027-06-20 → 2027-06-07 (-13d) | 2027-06-29 → 2027-06-16 (-13d) |  |  |  |  |
| SDR-2-CON-IR-ZA-2140 | Finishing Works for irrigation | 2027-06-20 → 2027-06-07 (-13d) | 2027-06-29 → 2027-06-16 (-13d) |  | 0d → 11d |  |  |
| 10 | **Repairs** | 2027-06-30 → 2027-06-17 (-13d) | 2027-07-05 → 2027-06-22 (-13d) |  |  |  |  |
| SDR-2-CON-IR-ZA-2150 | Repair for irrigation Works | 2027-06-30 → 2027-06-17 (-13d) | 2027-07-05 → 2027-06-22 (-13d) |  | 0d → 11d |  |  |
| 11 | **IRRIGATION WORKS IN ( PH2-A-MCA0 )** | 2027-05-08 → 2027-05-06 (-2d) | 2027-07-01 → 2027-06-30 (-1d) |  |  |  |  |
| 7 | **Pre install** | 2027-05-08 → 2027-05-06 (-2d) | 2027-06-03 → 2027-06-02 (-1d) |  |  |  |  |

| ID | Task | Start | Finish | Complete | Total float |
| --- | --- | --- | --- | --- | --- |
| SDR-2-CON-IR-ZA-2160 | Pre Install for irrigation Works | 2027-05-08 → 2027-05-06 (-2d) | 2027-06-03 → 2027-06-02 (-1d) |  |  |
| 8 | **install** | 2027-06-05 → 2027-06-03 (-2d) | 2027-06-19 → 2027-06-17 (-2d) |  |  |
| SDR-2-CON-IR-ZA-2170 | Installation of HDPE Pipe | 2027-06-05 → 2027-06-03 (-2d) | 2027-06-19 → 2027-06-17 (-2d) |  |  |
| 9 | **Finishing** | 2027-06-20 → 2027-06-19 (-1d) | 2027-06-29 → 2027-06-28 (-1d) |  |  |
| SDR-2-CON-IR-ZA-2180 | Finishing Works for irrigation | 2027-06-20 → 2027-06-19 (-1d) | 2027-06-29 → 2027-06-28 (-1d) |  |  |
| 10 | **Repairs** | 2027-06-30 → 2027-06-29 (-1d) | 2027-07-01 → 2027-06-30 (-1d) |  |  |
| SDR-2-CON-IR-ZA-2190 | Repair for irrigation Works | 2027-06-30 → 2027-06-29 (-1d) | 2027-07-01 → 2027-06-30 (-1d) |  |  |
| 12 | **IRRIGATION WORKS IN ( PH2-A-MCB0 )** | 2027-05-08 → 2027-05-06 (-2d) | 2027-07-05 → 2027-07-04 (-1d) |  |  |
| 7 | **Pre install** | 2027-05-08 → 2027-05-06 (-2d) | 2027-06-05 → 2027-06-03 (-2d) |  |  |
| SDR-2-CON-IR-ZA-2200 | Pre Install for irrigation Works | 2027-05-08 → 2027-05-06 (-2d) | 2027-06-05 → 2027-06-03 (-2d) |  | 0d → 1d |
| 8 | **install** | 2027-06-06 → 2027-06-05 (-1d) | 2027-06-19 → 2027-06-17 (-2d) |  |  |
| SDR-2-CON-IR-ZA-2210 | Installation of HDPE Pipe | 2027-06-06 → 2027-06-05 (-1d) | 2027-06-19 → 2027-06-17 (-2d) |  | 0d → 1d |
| 9 | **Finishing** | 2027-06-20 → 2027-06-19 (-1d) | 2027-06-28 → 2027-06-27 (-1d) |  |  |
| SDR-2-CON-IR-ZA-2220 | Finishing Works for irrigation | 2027-06-20 → 2027-06-19 (-1d) | 2027-06-28 → 2027-06-27 (-1d) |  | 0d → 1d |
| 10 | **Repairs** | 2027-06-29 → 2027-06-28 (-1d) | 2027-07-05 → 2027-07-04 (-1d) |  |  |
| SDR-2-CON-IR-ZA-2230 | Repair for irrigation Works | 2027-06-29 → 2027-06-28 (-1d) | 2027-07-05 → 2027-07-04 (-1d) |  | 0d → 1d |
| 3 | **IRRIGATION WORKS IN ( PH2-A-MCC0 )** | 2027-05-08 → 2027-05-06 (-2d) | 2027-07-04 → 2027-07-03 (-1d) |  |  |
| 7 | **Pre install** | 2027-05-08 → 2027-05-06 (-2d) | 2027-06-05 → 2027-06-03 (-2d) |  |  |
| SDR-2-CON-IR-ZA-2240 | Pre Install for irrigation Works | 2027-05-08 → 2027-05-06 (-2d) | 2027-06-05 → 2027-06-03 (-2d) |  | 0d → 1d |
| 8 | **install** | 2027-06-06 → 2027-06-05 (-1d) | 2027-06-20 → 2027-06-19 (-1d) |  |  |
| SDR-2-CON-IR-ZA-2250 | Installation of HDPE Pipe | 2027-06-06 → 2027-06-05 (-1d) | 2027-06-20 → 2027-06-19 (-1d) |  | 0d → 1d |
| 9 | **Finishing** | 2027-06-21 → 2027-06-20 (-1d) | 2027-07-01 → 2027-06-30 (-1d) |  |  |
| SDR-2-CON-IR-ZA-2260 | Finishing Works for irrigation | 2027-06-21 → 2027-06-20 (-1d) | 2027-07-01 → 2027-06-30 (-1d) |  | 0d → 1d |
| 10 | **Repairs** | 2027-07-03 → 2027-07-01 (-2d) | 2027-07-04 → 2027-07-03 (-1d) |  |  |
| SDR-2-CON-IR-ZA-2270 | Repair for irrigation Works | 2027-07-03 → 2027-07-01 (-2d) | 2027-07-04 → 2027-07-03 (-1d) |  | 0d → 1d |
| 4 | **IRRIGATION WORKS IN ( PH2-A-MCD0 )** | 2027-05-08 → 2026-09-24 (-226d) | 2027-07-05 → 2027-07-04 (-1d) |  |  |
| 7 | **Pre install** | 2027-05-08 → 2026-09-24 (-226d) | 2027-06-05 → 2027-06-03 (-2d) |  |  |
| SDR-2-CON-IR-ZA-2280 | Pre Install for irrigation Works | 2027-05-08 → 2026-09-24 A (-226d) | 2027-06-05 → 2027-06-03 (-2d) | 0% → 10% | 0d → 1d |
| 8 | **install** | 2027-06-06 → 2026-09-26 (-253d) | 2027-06-20 → 2027-06-19 (-1d) |  |  |
| SDR-2-CON-IR-ZA-2290 | Installation of HDPE Pipe | 2027-06-06 → 2026-09-26 A (-253d) | 2027-06-20 → 2027-06-19 (-1d) | 0% → 10% | 0d → 1d |
| 9 | **Finishing** | 2027-06-21 → 2027-06-20 (-1d) | 2027-06-30 → 2027-06-29 (-1d) |  |  |
| SDR-2-CON-IR-ZA-2300 | Finishing Works for irrigation | 2027-06-21 → 2027-06-20 (-1d) | 2027-06-30 → 2027-06-29 (-1d) |  | 0d → 1d |
| 10 | **Repairs** | 2027-07-01 → 2027-06-30 (-1d) | 2027-07-05 → 2027-07-04 (-1d) |  |  |
| SDR-2-CON-IR-ZA-2310 | Repair for irrigation Works | 2027-07-01 → 2027-06-30 (-1d) | 2027-07-05 → 2027-07-04 (-1d) |  | 0d → 1d |
| 5 | **IRRIGATION WORKS IN ( PH2-A-MCE0 )** | 2027-05-08 → 2027-05-06 (-2d) | 2027-07-05 → 2027-07-04 (-1d) |  |  |
| 7 | **Pre install** | 2027-05-08 → 2027-05-06 (-2d) | 2027-06-05 → 2027-06-03 (-2d) |  |  |
| SDR-2-CON-IR-ZA-2320 | Pre Install for irrigation Works | 2027-05-08 → 2027-05-06 (-2d) | 2027-06-05 → 2027-06-03 (-2d) |  | 0d → 1d |
| 8 | **install** | 2027-06-06 → 2027-06-05 (-1d) | 2027-06-20 → 2027-06-19 (-1d) |  |  |
| SDR-2-CON-IR-ZA-2330 | Installation of HDPE Pipe | 2027-06-06 → 2027-06-05 (-1d) | 2027-06-20 → 2027-06-19 (-1d) |  | 0d → 1d |
| 9 | **Finishing** | 2027-06-21 → 2027-06-20 (-1d) | 2027-07-01 → 2027-06-30 (-1d) |  |  |
| SDR-2-CON-IR-ZA-2340 | Finishing Works for irrigation | 2027-06-21 → 2027-06-20 (-1d) | 2027-07-01 → 2027-06-30 (-1d) |  | 0d → 1d |
| 10 | **Repairs** | 2027-07-03 → 2027-07-01 (-2d) | 2027-07-05 → 2027-07-04 (-1d) |  |  |
| SDR-2-CON-IR-ZA-2350 | Repair for irrigation Works | 2027-07-03 → 2027-07-01 (-2d) | 2027-07-05 → 2027-07-04 (-1d) |  | 0d → 1d |
| 6 | **IRRIGATION WORKS IN ( PH2-A-MCF0 )** | 2027-05-08 → 2027-05-06 (-2d) | 2027-07-05 → 2027-07-04 (-1d) |  |  |
| 7 | **Pre install** | 2027-05-08 → 2027-05-06 (-2d) | 2027-06-05 → 2027-06-03 (-2d) |  |  |
| SDR-2-CON-IR-ZA-2360 | Pre Install for irrigation Works | 2027-05-08 → 2027-05-06 (-2d) | 2027-06-05 → 2027-06-03 (-2d) |  | 0d → 1d |
| 8 | **install** | 2027-06-06 → 2027-06-05 (-1d) | 2027-06-20 → 2027-06-19 (-1d) |  |  |
| SDR-2-CON-IR-ZA-2370 | Installation of HDPE Pipe | 2027-06-06 → 2027-06-05 (-1d) | 2027-06-20 → 2027-06-19 (-1d) |  | 0d → 1d |
| 9 | **Finishing** | 2027-06-21 → 2027-06-20 (-1d) | 2027-07-01 → 2027-06-30 (-1d) |  |  |
| SDR-2-CON-IR-ZA-2380 | Finishing Works for irrigation | 2027-06-21 → 2027-06-20 (-1d) | 2027-07-01 → 2027-06-30 (-1d) |  | 0d → 1d |
| 10 | **Repairs** | 2027-07-03 → 2027-07-01 (-2d) | 2027-07-05 → 2027-07-04 (-1d) |  |  |
| SDR-2-CON-IR-ZA-2390 | Repair for irrigation Works | 2027-07-03 → 2027-07-01 (-2d) | 2027-07-05 → 2027-07-04 (-1d) |  | 0d → 1d |
| 7 | **IRRIGATION WORKS IN ( PH2-A-MCG0 )** | 2027-05-08 → 2027-05-06 (-2d) | 2027-07-05 → 2027-07-04 (-1d) |  |  |
| 7 | **Pre install** | 2027-05-08 → 2027-05-06 (-2d) | 2027-06-05 → 2027-06-03 (-2d) |  |  |
| SDR-2-CON-IR-ZA-2400 | Pre Install for irrigation Works | 2027-05-08 → 2027-05-06 (-2d) | 2027-06-05 → 2027-06-03 (-2d) |  | 0d → 1d |
| 8 | **install** | 2027-06-06 → 2027-06-05 (-1d) | 2027-06-20 → 2027-06-19 (-1d) |  |  |
| SDR-2-CON-IR-ZA-2410 | Installation of HDPE Pipe | 2027-06-06 → 2027-06-05 (-1d) | 2027-06-20 → 2027-06-19 (-1d) |  | 0d → 1d |
| 9 | **Finishing** | 2027-06-21 → 2027-06-20 (-1d) | 2027-07-03 → 2027-07-01 (-2d) |  |  |
| SDR-2-CON-IR-ZA-2420 | Finishing Works for irrigation | 2027-06-21 → 2027-06-20 (-1d) | 2027-07-03 → 2027-07-01 (-2d) |  | 0d → 1d |
| 10 | **Repairs** | 2027-07-04 → 2027-07-03 (-1d) | 2027-07-05 → 2027-07-04 (-1d) |  |  |
| SDR-2-CON-IR-ZA-2430 | Repair for irrigation Works | 2027-07-04 → 2027-07-03 (-1d) | 2027-07-05 → 2027-07-04 (-1d) |  | 0d → 1d |
| 8 | **IRRIGATION WORKS IN ( PH2-A-MCH0 )** | 2027-05-08 → 2027-05-06 (-2d) | 2027-07-05 → 2027-07-04 (-1d) |  |  |
| 7 | **Pre install** | 2027-05-08 → 2027-05-06 (-2d) | 2027-06-05 → 2027-06-03 (-2d) |  |  |
| SDR-2-CON-IR-ZA-2440 | Pre Install for irrigation Works | 2027-05-08 → 2027-05-06 (-2d) | 2027-06-05 → 2027-06-03 (-2d) |  | 0d → 1d |
| 8 | **install** | 2027-06-06 → 2027-06-05 (-1d) | 2027-06-20 → 2027-06-19 (-1d) |  |  |
| SDR-2-CON-IR-ZA-2450 | Installation of HDPE Pipe | 2027-06-06 → 2027-06-05 (-1d) | 2027-06-20 → 2027-06-19 (-1d) |  | 0d → 1d |
| 9 | **Finishing** | 2027-06-21 → 2027-06-20 (-1d) | 2027-07-03 → 2027-07-01 (-2d) |  |  |
| SDR-2-CON-IR-ZA-2460 | Finishing Works for irrigation | 2027-06-21 → 2027-06-20 (-1d) | 2027-07-03 → 2027-07-01 (-2d) |  | 0d → 1d |
| 10 | **Repairs** | 2027-07-04 → 2027-07-03 (-1d) | 2027-07-05 → 2027-07-04 (-1d) |  |  |
| SDR-2-CON-IR-ZA-2470 | Repair for irrigation Works | 2027-07-04 → 2027-07-03 (-1d) | 2027-07-05 → 2027-07-04 (-1d) |  | 0d → 1d |

| ID | Task | Start | Finish | Complete | Total float | Predecessors |
| --- | --- | --- | --- | --- | --- | --- |
| 9 | **IRRIGATION WORKS IN ( PH2-ART-MC00 )** | 2027-05-08 → 2027-05-06 (-2d) | 2027-07-05 → 2027-07-04 (-1d) |  |  |  |
| 7 | **Pre install** | 2027-05-08 → 2027-05-06 (-2d) | 2027-06-05 → 2027-06-03 (-2d) |  |  |  |
| SDR-2-CON-IR-ZA-2480 | Pre Install for irrigation Works | 2027-05-08 → 2027-05-06 (-2d) | 2027-06-05 → 2027-06-03 (-2d) |  | 0d → 1d |  |
| 8 | **install** | 2027-06-06 → 2027-06-05 (-1d) | 2027-06-20 → 2027-06-19 (-1d) |  |  |  |
| SDR-2-CON-IR-ZA-2490 | Installation of HDPE Pipe | 2027-06-06 → 2027-06-05 (-1d) | 2027-06-20 → 2027-06-19 (-1d) |  | 0d → 1d |  |
| 9 | **Finishing** | 2027-06-21 → 2027-06-20 (-1d) | 2027-07-03 → 2027-07-01 (-2d) |  |  |  |
| SDR-2-CON-IR-ZA-2500 | Finishing Works for irrigation | 2027-06-21 → 2027-06-20 (-1d) | 2027-07-03 → 2027-07-01 (-2d) |  | 0d → 1d |  |
| 10 | **Repairs** | 2027-07-04 → 2027-07-03 (-1d) | 2027-07-05 → 2027-07-04 (-1d) |  |  |  |
| SDR-2-CON-IR-ZA-2510 | Repair for irrigation Works | 2027-07-04 → 2027-07-03 (-1d) | 2027-07-05 → 2027-07-04 (-1d) |  | 0d → 1d |  |
| 10 | **IRRIGATION WORKS IN ( PH2-ART-MC10 )** | 2027-05-08 → 2026-08-31 (-250d) | 2027-07-05 → 2027-07-04 (-1d) |  |  |  |
| 7 | **Pre install** | 2027-05-08 → 2026-08-31 (-250d) | 2027-06-05 → 2027-05-06 (-30d) |  |  |  |
| SDR-2-CON-IR-ZA-2520 | Pre Install for irrigation Works | 2027-05-08 → 2026-08-31 A (-250d) | 2027-06-05 → 2027-05-06 (-30d) | 0% → 25% | 0d → 2.7d | SDR-2-CON-ST-ZA-4920, SDR-2-CON-IR-ZA-1000 SS → SDR-2-CON-IR-ZA-1000 FF, SDR-2-CON-ST-ZA-4920 FF |
| 8 | **install** | 2027-06-06 → 2027-05-08 (-29d) | 2027-06-20 → 2027-05-27 (-24d) |  |  |  |
| SDR-2-CON-IR-ZA-2530 | Installation of HDPE Pipe | 2027-06-06 → 2027-05-08 (-29d) | 2027-06-20 → 2027-05-27 (-24d) |  | 0d → 20d |  |
| 9 | **Finishing** | 2027-06-21 → 2027-05-29 (-23d) | 2027-07-03 → 2027-06-09 (-24d) |  |  |  |
| SDR-2-CON-IR-ZA-2540 | Finishing Works for irrigation | 2027-06-21 → 2027-05-29 (-23d) | 2027-07-03 → 2027-06-09 (-24d) |  | 0d → 20d |  |
| 10 | **Repairs** | 2027-07-04 → 2027-07-03 (-1d) | 2027-07-05 → 2027-07-04 (-1d) |  |  |  |
| SDR-2-CON-IR-ZA-2550 | Repair for irrigation Works | 2027-07-04 → 2027-07-03 (-1d) | 2027-07-05 → 2027-07-04 (-1d) |  | 0d → 1d |  |
| 13 | **Irrigation Controllers** | 2027-05-08 → 2027-05-04 (-4d) | 2027-07-04 → 2027-07-03 (-1d) |  |  |  |
| 1 | **Pre install** | 2027-05-08 → 2027-05-04 (-4d) | 2027-06-06 → 2027-06-03 (-3d) |  |  |  |
| SDR-2-CON-IR-ZA-2070 | Pre Install of Irrigation controllers | 2027-05-08 → 2027-05-04 (-4d) | 2027-06-06 → 2027-06-03 (-3d) |  | 0d → 2.7d |  |
| 2 | **install** | 2027-06-07 → 2027-06-03 (-4d) | 2027-06-23 → 2027-06-21 (-2d) |  |  |  |
| SDR-2-CON-IR-ZA-2760 | Install Irrigation controllers | 2027-06-07 → 2027-06-03 (-4d) | 2027-06-23 → 2027-06-21 (-2d) |  | 0d → 2.7d |  |
| 3 | **Finishing** | 2027-06-24 → 2027-06-21 (-3d) | 2027-07-03 → 2027-06-30 (-3d) |  |  |  |
| SDR-2-CON-IR-ZA-2770 | Finishing of Irrigation controllers | 2027-06-24 → 2027-06-21 (-3d) | 2027-07-03 → 2027-06-30 (-3d) |  | 0d → 2.7d |  |
| 4 | **Repairs** | 2027-07-04 → 2027-07-03 (-1d) | 2027-07-04 → 2027-07-03 (-1d) |  |  |  |
| SDR-2-CON-IR-ZA-2780 | Repairs of Irrigation controllers | 2027-07-04 → 2027-07-03 (-1d) | 2027-07-04 → 2027-07-03 (-1d) |  | 0d → 1d |  |
| 14 | **Decoder Cable & Conduit Works** | 2027-05-08 → 2027-05-04 (-4d) | 2027-07-04 → 2027-07-03 (-1d) |  |  |  |
| 1 | **Pre install** | 2027-05-08 → 2027-05-04 (-4d) | 2027-06-06 → 2027-06-03 (-3d) |  |  |  |
| SDR-2-CON-IR-ZA-2080 | Pre Install of Decoder Cable & Conduits Works | 2027-05-08 → 2027-05-04 (-4d) | 2027-06-06 → 2027-06-03 (-3d) |  | 3d → 5.7d |  |
| 2 | **install** | 2027-06-07 → 2027-06-03 (-4d) | 2027-06-23 → 2027-06-21 (-2d) |  |  |  |
| SDR-2-CON-IR-ZA-2090 | Install of Decoder Cable & Conduits Works | 2027-06-07 → 2027-06-03 (-4d) | 2027-06-23 → 2027-06-21 (-2d) |  | 3d → 5.7d |  |
| 3 | **Finishing** | 2027-06-24 → 2027-06-21 (-3d) | 2027-06-29 → 2027-06-27 (-2d) |  |  |  |
| SDR-2-CON-IR-ZA-2790 | Finishing of Decoder Cable & Conduits Works | 2027-06-24 → 2027-06-21 (-3d) | 2027-06-29 → 2027-06-27 (-2d) |  | 3d → 5.7d |  |
| 4 | **Repairs** | 2027-07-04 → 2027-07-03 (-1d) | 2027-07-04 → 2027-07-03 (-1d) |  |  |  |
| SDR-2-CON-IR-ZA-2800 | Repair of Decoder Cable & Conduits Works | 2027-07-04 → 2027-07-03 (-1d) | 2027-07-04 → 2027-07-03 (-1d) |  | 0d → 1d |  |
| 15 | **Solar Power System Installation** | 2027-05-08 → 2027-05-04 (-4d) | 2027-07-05 → 2027-07-04 (-1d) |  |  |  |
| 1 | **Pre install** | 2027-05-08 → 2027-05-04 (-4d) | 2027-06-06 → 2027-06-03 (-3d) |  |  |  |
| SDR-2-CON-IR-ZA-2100 | Pre Install of Solar Power System Installation | 2027-05-08 → 2027-05-04 (-4d) | 2027-06-06 → 2027-06-03 (-3d) |  | 3d → 5.7d |  |
| 2 | **install** | 2027-06-07 → 2027-06-03 (-4d) | 2027-06-23 → 2027-06-21 (-2d) |  |  |  |
| SDR-2-CON-IR-ZA-2810 | Install of Pre Install of Solar Power System Installation | 2027-06-07 → 2027-06-03 (-4d) | 2027-06-23 → 2027-06-21 (-2d) |  | 3d → 5.7d |  |
| 3 | **Finishing** | 2027-06-24 → 2027-06-21 (-3d) | 2027-06-30 → 2027-06-28 (-2d) |  |  |  |
| SDR-2-CON-IR-ZA-2820 | Finishing of Pre Install of Solar Power System Installation | 2027-06-24 → 2027-06-21 (-3d) | 2027-06-30 → 2027-06-28 (-2d) |  | 3d → 5.7d |  |
| 4 | **Repairs** | 2027-07-05 → 2027-07-04 (-1d) | 2027-07-05 → 2027-07-04 (-1d) |  |  |  |
| SDR-2-CON-IR-ZA-2830 | Repair of Solar Power System Installation | 2027-07-05 → 2027-07-04 (-1d) | 2027-07-05 → 2027-07-04 (-1d) |  | 0d → 1d |  |
| 16 | **System Integration & Programming** | 2027-05-08 → 2027-05-04 (-4d) | 2027-07-05 → 2027-07-04 (-1d) |  |  |  |
| 1 | **Pre install** | 2027-05-08 → 2027-05-04 (-4d) | 2027-06-06 → 2027-06-03 (-3d) |  |  |  |
| SDR-2-CON-IR-ZA-2110 | Pre Install of System Integration & Programming | 2027-05-08 → 2027-05-04 (-4d) | 2027-06-06 → 2027-06-03 (-3d) |  | 0d → 2.7d |  |
| 2 | **install** | 2027-06-07 → 2027-06-03 (-4d) | 2027-06-23 → 2027-06-21 (-2d) |  |  |  |
| SDR-2-CON-IR-ZA-2840 | Install of System Integration & Programming | 2027-06-07 → 2027-06-03 (-4d) | 2027-06-23 → 2027-06-21 (-2d) |  | 0d → 2.7d |  |
| 3 | **Finishing** | 2027-06-24 → 2027-06-21 (-3d) | 2027-07-03 → 2027-06-30 (-3d) |  |  |  |
| SDR-2-CON-IR-ZA-2850 | Finishing of System Integration & Programming | 2027-06-24 → 2027-06-21 (-3d) | 2027-07-03 → 2027-06-30 (-3d) |  | 0d → 2.7d |  |
| 4 | **Repairs** | 2027-07-05 → 2027-07-04 (-1d) | 2027-07-05 → 2027-07-04 (-1d) |  |  |  |
| SDR-2-CON-IR-ZA-2860 | Repair of System Integration & Programming | 2027-07-05 → 2027-07-04 (-1d) | 2027-07-05 → 2027-07-04 (-1d) |  | 0d → 1d |  |
| 1 | **Landscape Works** | 2027-05-08 → 2027-05-04 (-4d) | 2027-07-05 → 2027-07-04 (-1d) |  |  |  |
| 1 | **GROUND COVER** | 2027-05-08 → 2027-05-04 (-4d) | 2027-06-15 → 2027-06-13 (-2d) |  |  |  |
| SDR-2-CON-LS-ZA-1000 | Clearing & grubbing of landscape areas | 2027-05-08 → 2027-05-04 (-4d) | 2027-05-30 → 2027-05-27 (-3d) |  | 0d → 2.7d |  |
| SDR-2-CON-LS-ZA-1010 | Grass laying | 2027-05-31 → 2027-05-27 (-4d) | 2027-06-15 → 2027-06-13 (-2d) |  | 0d → 2.7d |  |
| 2 | **Trees** | 2027-06-16 → 2027-06-13 (-3d) | 2027-07-05 → 2027-07-03 (-2d) |  |  |  |
| SDR-2-CON-LS-ZA-1020 | Albizia lebbeck tress planting. | 2027-06-16 → 2027-06-13 (-3d) | 2027-07-01 → 2027-06-29 (-2d) |  | 0d → 2.7d |  |
| SDR-2-CON-LS-ZA-1030 | Tabopia tress planting. | 2027-06-16 → 2027-06-13 (-3d) | 2027-07-01 → 2027-06-29 (-2d) |  | 0d → 2.7d |  |
| SDR-2-CON-LS-ZA-1040 | Plumeria alba tress planting. | 2027-06-20 → 2027-06-16 (-4d) | 2027-07-05 → 2027-07-03 (-2d) |  | 0d → 2.7d |  |
| SDR-2-CON-LS-ZA-1050 | Cassia glauca tress planting. | 2027-06-20 → 2027-06-16 (-4d) | 2027-07-05 → 2027-07-03 (-2d) |  | 0d → 2.7d |  |
| 3 | **Miscellaneous landscaping items** | 2027-06-21 → 2027-06-20 (-1d) | 2027-07-05 → 2027-07-04 (-1d) |  |  |  |
| SDR-2-CON-LS-ZA-1060 | Gravel/Stone mulch: 75mm thick Hard, durable stone, washed free of loam, sand, clay, | 2027-06-21 → 2027-06-20 (-1d) | 2027-07-05 → 2027-07-04 (-1d) |  | 0d → 1d |  |
| ZG | **ZONE G** | 2027-05-08 → 2027-05-04 (-4d) | 2027-07-05 → 2027-07-04 (-1d) |  |  |  |
| 2 | **Irrigation Works** | 2027-05-08 → 2027-05-04 (-4d) | 2027-07-05 → 2027-07-04 (-1d) |  |  |  |
| 11 | **IRRIGATION WORKS IN ( PH2-G-MCE0 )** | 2027-05-08 → 2027-05-06 (-2d) | 2027-07-05 → 2027-07-04 (-1d) |  |  |  |
| 7 | **Pre install** | 2027-05-08 → 2027-05-06 (-2d) | 2027-06-05 → 2027-06-03 (-2d) |  |  |  |
| SDR-2-CON-IR-ZA-2560 | Pre Install for irrigation Works | 2027-05-08 → 2027-05-06 (-2d) | 2027-06-05 → 2027-06-03 (-2d) |  | 0d → 1d |  |

| ID | Task | Start | Finish | Total float |
| --- | --- | --- | --- | --- |
| 8 | **install** | 2027-06-06 → 2027-06-05 (-1d) | 2027-06-20 → 2027-06-19 (-1d) |  |
| SDR-2-CON-IR-ZA-2570 | Installation of HDPE Pipe | 2027-06-06 → 2027-06-05 (-1d) | 2027-06-20 → 2027-06-19 (-1d) | 0d → 1d |
| 9 | **Finishing** | 2027-06-21 → 2027-06-20 (-1d) | 2027-07-01 → 2027-06-30 (-1d) |  |
| SDR-2-CON-IR-ZA-2580 | Finishing Works for irrigation | 2027-06-21 → 2027-06-20 (-1d) | 2027-07-01 → 2027-06-30 (-1d) | 0d → 1d |
| 10 | **Repairs** | 2027-07-03 → 2027-07-01 (-2d) | 2027-07-05 → 2027-07-04 (-1d) |  |
| SDR-2-CON-IR-ZA-2590 | Repair for irrigation Works | 2027-07-03 → 2027-07-01 (-2d) | 2027-07-05 → 2027-07-04 (-1d) | 0d → 1d |
| 5 | **IRRIGATION WORKS IN ( PH2-G-MCZ0 )** | 2027-05-08 → 2027-05-06 (-2d) | 2027-07-05 → 2027-07-04 (-1d) |  |
| 7 | **Pre install** | 2027-05-08 → 2027-05-06 (-2d) | 2027-06-05 → 2027-06-03 (-2d) |  |
| SDR-2-CON-IR-ZA-2600 | Pre Install for irrigation Works | 2027-05-08 → 2027-05-06 (-2d) | 2027-06-05 → 2027-06-03 (-2d) | 0d → 1d |
| 8 | **install** | 2027-06-06 → 2027-06-05 (-1d) | 2027-06-20 → 2027-06-19 (-1d) |  |
| SDR-2-CON-IR-ZA-2610 | Installation of HDPE Pipe | 2027-06-06 → 2027-06-05 (-1d) | 2027-06-20 → 2027-06-19 (-1d) | 0d → 1d |
| 9 | **Finishing** | 2027-06-21 → 2027-06-20 (-1d) | 2027-07-01 → 2027-06-30 (-1d) |  |
| SDR-2-CON-IR-ZA-2620 | Finishing Works for irrigation | 2027-06-21 → 2027-06-20 (-1d) | 2027-07-01 → 2027-06-30 (-1d) | 0d → 1d |
| 10 | **Repairs** | 2027-07-03 → 2027-07-01 (-2d) | 2027-07-05 → 2027-07-04 (-1d) |  |
| SDR-2-CON-IR-ZA-2630 | Repair for irrigation Works | 2027-07-03 → 2027-07-01 (-2d) | 2027-07-05 → 2027-07-04 (-1d) | 0d → 1d |
| 1 | **IRRIGATION WORKS IN ( PH2-G-MCA0 )** | 2027-05-08 → 2027-05-06 (-2d) | 2027-07-05 → 2027-07-04 (-1d) |  |
| 7 | **Pre install** | 2027-05-08 → 2027-05-06 (-2d) | 2027-06-03 → 2027-06-02 (-1d) |  |
| SDR-2-CON-IR-ZA-2640 | Pre Install for irrigation Works | 2027-05-08 → 2027-05-06 (-2d) | 2027-06-03 → 2027-06-02 (-1d) | 0d → 1d |
| 8 | **install** | 2027-06-05 → 2027-06-03 (-2d) | 2027-06-19 → 2027-06-17 (-2d) |  |
| SDR-2-CON-IR-ZA-2650 | Installation of HDPE Pipe | 2027-06-05 → 2027-06-03 (-2d) | 2027-06-19 → 2027-06-17 (-2d) | 0d → 1d |
| 9 | **Finishing** | 2027-06-20 → 2027-06-19 (-1d) | 2027-07-03 → 2027-07-01 (-2d) |  |
| SDR-2-CON-IR-ZA-2660 | Finishing Works for irrigation | 2027-06-20 → 2027-06-19 (-1d) | 2027-07-03 → 2027-07-01 (-2d) | 0d → 1d |
| 10 | **Repairs** | 2027-07-04 → 2027-07-03 (-1d) | 2027-07-05 → 2027-07-04 (-1d) |  |
| SDR-2-CON-IR-ZA-2670 | Repair for irrigation Works | 2027-07-04 → 2027-07-03 (-1d) | 2027-07-05 → 2027-07-04 (-1d) | 0d → 1d |
| 2 | **IRRIGATION WORKS IN ( PH2-G-MCF0 )** | 2027-05-08 → 2027-05-06 (-2d) | 2027-07-05 → 2027-07-04 (-1d) |  |
| 7 | **Pre install** | 2027-05-08 → 2027-05-06 (-2d) | 2027-06-05 → 2027-06-03 (-2d) |  |
| SDR-2-CON-IR-ZA-2680 | Pre Install for irrigation Works | 2027-05-08 → 2027-05-06 (-2d) | 2027-06-05 → 2027-06-03 (-2d) | 0d → 1d |
| 8 | **install** | 2027-06-06 → 2027-06-05 (-1d) | 2027-06-20 → 2027-06-19 (-1d) |  |
| SDR-2-CON-IR-ZA-2690 | Installation of HDPE Pipe | 2027-06-06 → 2027-06-05 (-1d) | 2027-06-20 → 2027-06-19 (-1d) | 0d → 1d |
| 9 | **Finishing** | 2027-06-21 → 2027-06-20 (-1d) | 2027-07-03 → 2027-07-01 (-2d) |  |
| SDR-2-CON-IR-ZA-2700 | Finishing Works for irrigation | 2027-06-21 → 2027-06-20 (-1d) | 2027-07-03 → 2027-07-01 (-2d) | 0d → 1d |
| 10 | **Repairs** | 2027-07-04 → 2027-07-03 (-1d) | 2027-07-05 → 2027-07-04 (-1d) |  |
| SDR-2-CON-IR-ZA-2710 | Repair for irrigation Works | 2027-07-04 → 2027-07-03 (-1d) | 2027-07-05 → 2027-07-04 (-1d) | 0d → 1d |
| 3 | **IRRIGATION WORKS IN ( PH2-G-MCG0 )** | 2027-05-08 → 2027-05-06 (-2d) | 2027-07-05 → 2027-07-04 (-1d) |  |
| 7 | **Pre install** | 2027-05-08 → 2027-05-06 (-2d) | 2027-06-03 → 2027-06-02 (-1d) |  |
| SDR-2-CON-IR-ZA-2720 | Pre Install for irrigation Works | 2027-05-08 → 2027-05-06 (-2d) | 2027-06-03 → 2027-06-02 (-1d) | 0d → 1d |
| 8 | **install** | 2027-06-05 → 2027-06-03 (-2d) | 2027-06-19 → 2027-06-17 (-2d) |  |
| SDR-2-CON-IR-ZA-2730 | Installation of HDPE Pipe | 2027-06-05 → 2027-06-03 (-2d) | 2027-06-19 → 2027-06-17 (-2d) | 0d → 1d |
| 9 | **Finishing** | 2027-06-20 → 2027-06-19 (-1d) | 2027-07-03 → 2027-07-01 (-2d) |  |
| SDR-2-CON-IR-ZA-2740 | Finishing Works for irrigation | 2027-06-20 → 2027-06-19 (-1d) | 2027-07-03 → 2027-07-01 (-2d) | 0d → 1d |
| 10 | **Repairs** | 2027-07-04 → 2027-07-03 (-1d) | 2027-07-05 → 2027-07-04 (-1d) |  |
| SDR-2-CON-IR-ZA-2750 | Repair for irrigation Works | 2027-07-04 → 2027-07-03 (-1d) | 2027-07-05 → 2027-07-04 (-1d) | 0d → 1d |
| 13 | **Irrigation Controllers** | 2027-05-08 → 2027-05-04 (-4d) | 2027-07-05 → 2027-07-04 (-1d) |  |
| 1 | **Pre install** | 2027-05-08 → 2027-05-04 (-4d) | 2027-06-06 → 2027-06-03 (-3d) |  |
| SDR-2-CON-IR-ZA-2870 | Pre Install of Irrigation controllers | 2027-05-08 → 2027-05-04 (-4d) | 2027-06-06 → 2027-06-03 (-3d) | 0d → 2.7d |
| 2 | **install** | 2027-06-07 → 2027-06-03 (-4d) | 2027-06-23 → 2027-06-21 (-2d) |  |
| SDR-2-CON-IR-ZA-2880 | Install Irrigation controllers | 2027-06-07 → 2027-06-03 (-4d) | 2027-06-23 → 2027-06-21 (-2d) | 0d → 2.7d |
| 3 | **Finishing** | 2027-06-24 → 2027-06-21 (-3d) | 2027-07-03 → 2027-06-30 (-3d) |  |
| SDR-2-CON-IR-ZA-2890 | Finishing of Irrigation controllers | 2027-06-24 → 2027-06-21 (-3d) | 2027-07-03 → 2027-06-30 (-3d) | 0d → 2.7d |
| 4 | **Repairs** | 2027-07-04 → 2027-07-03 (-1d) | 2027-07-05 → 2027-07-04 (-1d) |  |
| SDR-2-CON-IR-ZA-2900 | Repairs of Irrigation controllers | 2027-07-04 → 2027-07-03 (-1d) | 2027-07-05 → 2027-07-04 (-1d) | 0d → 1d |
| 14 | **Decoder Cable & Conduit Works** | 2027-05-08 → 2027-05-04 (-4d) | 2027-07-05 → 2027-07-04 (-1d) |  |
| 1 | **Pre install** | 2027-05-08 → 2027-05-04 (-4d) | 2027-06-06 → 2027-06-03 (-3d) |  |
| SDR-2-CON-IR-ZA-2910 | Pre Install of Decoder Cable & Conduits Works | 2027-05-08 → 2027-05-04 (-4d) | 2027-06-06 → 2027-06-03 (-3d) | 0d → 2.7d |
| 2 | **install** | 2027-06-07 → 2027-06-03 (-4d) | 2027-06-23 → 2027-06-21 (-2d) |  |
| SDR-2-CON-IR-ZA-2920 | Install of Decoder Cable & Conduits Works | 2027-06-07 → 2027-06-03 (-4d) | 2027-06-23 → 2027-06-21 (-2d) | 0d → 2.7d |
| 3 | **Finishing** | 2027-06-24 → 2027-06-21 (-3d) | 2027-07-04 → 2027-07-01 (-3d) |  |
| SDR-2-CON-IR-ZA-2930 | Finishing of Decoder Cable & Conduits Works | 2027-06-24 → 2027-06-21 (-3d) | 2027-07-04 → 2027-07-01 (-3d) | 0d → 2.7d |
| 4 | **Repairs** | 2027-07-05 → 2027-07-04 (-1d) | 2027-07-05 → 2027-07-04 (-1d) |  |
| SDR-2-CON-IR-ZA-2940 | Repair of Decoder Cable & Conduits Works | 2027-07-05 → 2027-07-04 (-1d) | 2027-07-05 → 2027-07-04 (-1d) | 0d → 1d |
| 15 | **Solar Power System Installation** | 2027-05-08 → 2027-05-04 (-4d) | 2027-07-05 → 2027-07-03 (-2d) |  |
| 1 | **Pre install** | 2027-05-08 → 2027-05-04 (-4d) | 2027-06-06 → 2027-06-03 (-3d) |  |
| SDR-2-CON-IR-ZA-2950 | Pre Install of Solar Power System Installation | 2027-05-08 → 2027-05-04 (-4d) | 2027-06-06 → 2027-06-03 (-3d) | 0d → 2.7d |
| 2 | **install** | 2027-06-07 → 2027-06-03 (-4d) | 2027-06-23 → 2027-06-21 (-2d) |  |
| SDR-2-CON-IR-ZA-2960 | Install of Pre Install of Solar Power System Installation | 2027-06-07 → 2027-06-03 (-4d) | 2027-06-23 → 2027-06-21 (-2d) | 0d → 2.7d |
| 3 | **Finishing** | 2027-06-24 → 2027-06-21 (-3d) | 2027-07-01 → 2027-06-29 (-2d) |  |
| SDR-2-CON-IR-ZA-2970 | Finishing of Pre Install of Solar Power System Installation | 2027-06-24 → 2027-06-21 (-3d) | 2027-07-01 → 2027-06-29 (-2d) | 0d → 2.7d |
| 4 | **Repairs** | 2027-07-03 → 2027-06-29 (-4d) | 2027-07-05 → 2027-07-03 (-2d) |  |
| SDR-2-CON-IR-ZA-2980 | Repair of Solar Power System Installation | 2027-07-03 → 2027-06-29 (-4d) | 2027-07-05 → 2027-07-03 (-2d) | 0d → 2.7d |
| 1 | **Landscape Works** | 2027-05-08 → 2027-05-04 (-4d) | 2027-07-05 → 2027-07-03 (-2d) |  |

| ID | Task | Start | Finish | Complete | Total float | Predecessors |
| --- | --- | --- | --- | --- | --- | --- |
| 1 | **GROUND COVER** | 2027-05-08 → 2027-05-04 (-4d) | 2027-06-14 → 2027-06-12 (-2d) |  |  |  |
| SDR-2-CON-LS-ZG-1000 | Clearing & grubbing of landscape areas | 2027-05-08 → 2027-05-04 (-4d) | 2027-05-30 → 2027-05-27 (-3d) |  | 0d → 2.7d |  |
| SDR-2-CON-LS-ZG-1010 | Grass laying | 2027-05-31 → 2027-05-27 (-4d) | 2027-06-14 → 2027-06-12 (-2d) |  | 0d → 2.7d |  |
| 2 | **Trees** | 2027-06-15 → 2027-06-12 (-3d) | 2027-07-05 → 2027-07-03 (-2d) |  |  |  |
| SDR-2-CON-LS-ZG-1020 | Albizia lebbeck tress planting. | 2027-06-15 → 2027-06-12 (-3d) | 2027-07-05 → 2027-07-03 (-2d) |  | 0d → 2.7d |  |
| SDR-2-CON-LS-ZG-1030 | Tabopia tress planting. | 2027-06-15 → 2027-06-12 (-3d) | 2027-07-05 → 2027-07-03 (-2d) |  | 0d → 2.7d |  |
| SDR-2-CON-LS-ZG-1040 | Plumeria alba tress planting. | 2027-06-15 → 2027-06-12 (-3d) | 2027-07-05 → 2027-07-03 (-2d) |  | 0d → 2.7d |  |
| SDR-2-CON-LS-ZG-1050 | Cassia glauca tress planting. | 2027-06-15 → 2027-06-12 (-3d) | 2027-07-05 → 2027-07-03 (-2d) |  | 0d → 2.7d |  |
| 3 | **Miscellaneous landscaping items** | 2027-06-15 → 2027-06-12 (-3d) | 2027-07-05 → 2027-07-03 (-2d) |  |  |  |
| SDR-2-CON-LS-ZG-1060 | Gravel/Stone mulch: 75mm thick Hard, durable stone, washed free of loam, sand, clay, | 2027-06-15 → 2027-06-12 (-3d) | 2027-07-05 → 2027-07-03 (-2d) |  | 0d → 2.7d |  |
| CC | **CCTV Works** | 2026-09-02 → 2026-07-25 (-39d) | 2027-01-26 → 2027-04-06 (+70d) |  |  |  |
| ZA | **ZONE A** | 2026-09-02 → 2026-07-25 (-39d) | 2027-01-26 → 2027-04-06 (+70d) |  |  |  |
| 1 | **Poles 1st and 2nd Fix Works** | 2026-09-02 → 2026-07-25 (-39d) | 2026-10-10 → 2026-12-19 (+70d) |  |  |  |
| 1 | **Excavation** | 2026-09-02 → 2026-07-25 (-39d) | 2026-09-13 → 2026-12-01 (+79d) |  |  |  |
| SDR-2-CON-CC-ZA-1000 | Excavation 1Sst & 2nd Fix Works | 2026-09-02 → 2026-07-25 A (-39d) | 2026-09-13 → 2026-12-01 (+79d) | 0% → 50% | 0d → 2d | SDR-2-CON-ST-ZA-6190, SDR-2-CON-ST-ZA-6280, SDR-2-PRO-DEL-M-1070, SDR-2-PRO-DEL-M-1060, SDR-2-PRO-ST-E-1140, SDR-2-PRO-ST-E-1170, SDR-2-CON-MV-ZA-1000, SDR-2-PRO-DEL-E-1130, SDR-2-PRO-DEL-E-1100 → SDR-2-CON-ST-ZA-6190, SDR-2-CON-MV-ZA-1000 FF, SDR-2-PRO-DEL-E-1130 FF, SDR-2-PRO-DEL-M-1070 FF, SDR-2-PRO-DEL-M-1060 FF, SDR-2-PRO-DEL-E-1100 FF, SDR-2-CON-ST-ZA-6280 FF, SDR-2-PRO-ST-E-1140 FF, SDR-2-PRO-ST-E-1170 FF |
| 2 | **Install Footings** | 2026-09-14 → 2026-09-03 (-11d) | 2026-09-21 → 2026-12-01 (+71d) |  |  |  |
| SDR-2-CON-CC-ZA-1030 | Install Footings | 2026-09-14 → 2026-09-03 A (-11d) | 2026-09-21 → 2026-12-01 (+71d) | 0% → 30% | 0d → 2d | SDR-2-CON-CC-ZA-1000 SS, SDR-2-CON-CC-ZA-1000, SDR-2-PRO-DEL-E-1120, SDR-2-PRO-DEL-E-1110, SDR-2-PRO-DEL-E-1140, SDR-2-PRO-DEL-E-1080 → SDR-2-CON-CC-ZA-1000 FF, SDR-2-PRO-DEL-E-1120 FF, SDR-2-PRO-DEL-E-1110 FF, SDR-2-PRO-DEL-E-1140 FF, SDR-2-PRO-DEL-E-1080 FF |
| 3 | **Backfilling** | 2026-09-22 → 2026-12-02 (+71d) | 2026-09-30 → 2026-12-09 (+70d) |  |  |  |
| SDR-2-CON-CC-ZA-1050 | Backfilling 1Sst & 2nd Fix Works | 2026-09-22 → 2026-12-02 (+71d) | 2026-09-30 → 2026-12-09 (+70d) |  | 0d → 2d |  |
| 4 | **Install pole** | 2026-10-01 → 2026-12-10 (+70d) | 2026-10-10 → 2026-12-19 (+70d) |  |  |  |
| SDR-2-CON-CC-ZA-1060 | Install Pole | 2026-10-01 → 2026-12-10 (+70d) | 2026-10-10 → 2026-12-19 (+70d) |  | 0d → 2d |  |
| 2 | **25m Pole Package** | 2026-10-11 → 2026-08-01 (-71d) | 2027-01-24 → 2027-04-06 (+72d) |  |  |  |
| 1 | **Excavation** | 2026-10-11 → 2026-08-01 (-71d) | 2026-11-03 → 2026-12-19 (+46d) |  |  |  |
| SDR-2-CON-CC-ZA-1080 | 25 Meters Pole Excavation | 2026-10-11 → 2026-08-01 A (-71d) | 2026-11-03 → 2026-12-19 (+46d) | 0% → 50% | 0d → 2d | SDR-2-PRO-ST-E-1090, SDR-2-PRO-ST-E-1150, SDR-2-PRO-ST-C-1080, SDR-2-PRO-MAS-C-1090, SDR-2-PRO-MAS-E-1030, SDR-2-CON-CC-ZA-1060, SDR-2-PRO-DEL-E-1150, SDR-2-PRO-ST-E-1160 → SDR-2-PRO-ST-E-1090, SDR-2-PRO-MAS-C-1090, SDR-2-PRO-DEL-E-1150 FF, SDR-2-PRO-ST-C-1080 FF, SDR-2-CON-CC-ZA-1060 FF, SDR-2-PRO-ST-E-1160 FF, SDR-2-PRO-ST-E-1150 FF, SDR-2-PRO-MAS-E-1030 |
| 2 | **Install Footings** | 2026-11-04 → 2026-09-03 (-62d) | 2026-11-26 → 2026-12-19 (+23d) |  |  |  |
| SDR-2-CON-CC-ZA-1090 | 25 Meters pole installation Footings | 2026-11-04 → 2026-09-03 A (-62d) | 2026-11-26 → 2026-12-19 (+23d) | 0% → 30% | 11d → 52d | SDR-2-CON-CC-ZA-1080, SDR-2-PRO-ST-C-1090, SDR-2-PRO-MAL-E-1110, SDR-2-PRO-DEL-E-1160, SDR-2-PRO-DEL-E-1190, SDR-2-PRO-DEL-E-1180, SDR-2-PRO-DEL-E-1170 → SDR-2-PRO-MAL-E-1110, SDR-2-CON-CC-ZA-1080 FF, SDR-2-PRO-DEL-E-1160 FF, SDR-2-PRO-DEL-E-1190 FF, SDR-2-PRO-DEL-E-1180 FF, SDR-2-PRO-DEL-E-1170 FF, SDR-2-PRO-ST-C-1090 FF |
| 3 | **Backfilling** | 2026-12-07 → 2027-02-11 (+66d) | 2026-12-30 → 2027-03-08 (+68d) |  |  |  |
| SDR-2-CON-CC-ZA-1100 | 25 Meters pole Backfilling | 2026-12-07 → 2027-02-11 (+66d) | 2026-12-30 → 2027-03-08 (+68d) |  | 11d → 14d |  |
| 4 | **Install pole** | 2026-12-31 → 2027-03-14 (+73d) | 2027-01-24 → 2027-04-06 (+72d) |  |  |  |
| SDR-2-CON-CC-ZA-1110 | 25 Meters pole installation | 2026-12-31 → 2027-03-14 (+73d) | 2027-01-24 → 2027-04-06 (+72d) |  | 11d → 14d |  |
| 3 | **7m Pole Package** | 2026-10-11 → 2026-08-01 (-71d) | 2027-01-25 → 2027-02-15 (+21d) |  |  |  |
| 1 | **Excavation** | 2026-10-11 → 2026-08-01 (-71d) | 2026-11-03 → 2026-12-19 (+46d) |  |  |  |
| SDR-2-CON-CC-ZA-1240 | 7m Meters Pole Excavation | 2026-10-11 → 2026-08-01 A (-71d) | 2026-11-03 → 2026-12-19 (+46d) | 0% → 50% | 0d → 2d | SDR-2-CON-ST-ZA-6330, SDR-2-PRO-ST-E-1190, SDR-2-CON-CC-ZA-1080 SS → SDR-2-CON-CC-ZA-1080 FF, SDR-2-CON-ST-ZA-6330 FF, SDR-2-PRO-ST-E-1190 FF |
| 2 | **Install Footings** | 2026-11-04 → 2026-09-03 (-62d) | 2026-11-28 → 2026-12-19 (+21d) |  |  |  |
| SDR-2-CON-CC-ZA-1250 | 7m Meters pole installation Footings | 2026-11-04 → 2026-09-03 A (-62d) | 2026-11-28 → 2026-12-19 (+21d) | 0% → 30% | 10d → 52d | SDR-2-CON-CC-ZA-1240 → SDR-2-CON-CC-ZA-1240 FF |
| 3 | **Backfilling** | 2026-12-07 → 2026-12-28 (+21d) | 2026-12-30 → 2027-01-20 (+21d) |  |  |  |
| SDR-2-CON-CC-ZA-1260 | 7m Meters pole Backfilling | 2026-12-07 → 2026-12-28 (+21d) | 2026-12-30 → 2027-01-20 (+21d) |  | 10d → 52d |  |
| 4 | **Install pole** | 2027-01-02 → 2027-01-23 (+21d) | 2027-01-25 → 2027-02-15 (+21d) |  |  |  |
| SDR-2-CON-CC-ZA-1270 | 7 Meters pole Installation | 2027-01-02 → 2027-01-23 (+21d) | 2027-01-25 → 2027-02-15 (+21d) |  | 10d → 52d |  |
| 4 | **35m Pole Package** | 2026-11-04 → 2026-08-01 (-95d) | 2027-01-24 → 2027-04-06 (+72d) |  |  |  |
| 1 | **Excavation** | 2026-11-04 → 2026-08-01 (-95d) | 2026-11-24 → 2026-12-19 (+25d) |  |  |  |
| SDR-2-CON-CC-ZA-1380 | 35m Meters Pole Excavation | 2026-11-04 → 2026-08-01 A (-95d) | 2026-11-24 → 2026-12-19 (+25d) | 0% → 50% | 0d → 2d | SDR-2-PRO-ST-E-1180, SDR-2-PRO-ST-E-1210, SDR-2-PRO-ST-E-1220, SDR-2-PRO-ST-E-1230, SDR-2-CON-CC-ZA-1240 → SDR-2-CON-CC-ZA-1240 FF, SDR-2-PRO-ST-E-1180 FF, SDR-2-PRO-ST-E-1210 FF, SDR-2-PRO-ST-E-1220 FF, SDR-2-PRO-ST-E-1230 FF |
| 2 | **Install Footings** | 2026-11-25 → 2026-09-03 (-83d) | 2026-12-12 → 2026-12-20 (+8d) |  |  |  |
| SDR-2-CON-CC-ZA-1390 | 35m Meters pole installation Footings | 2026-11-25 → 2026-09-03 A (-83d) | 2026-12-12 → 2026-12-20 (+8d) | 0% → 30% | 11d → 65d | SDR-2-CON-SL-ZA-3100, SDR-2-CON-CC-ZA-1380 → SDR-2-CON-CC-ZA-1380 FF, SDR-2-CON-SL-ZA-3100 FF |
| 3 | **Backfilling** | 2026-12-13 → 2027-02-17 (+66d) | 2026-12-31 → 2027-03-14 (+73d) |  |  |  |
| SDR-2-CON-CC-ZA-1400 | 35m Meters pole Backfilling | 2026-12-13 → 2027-02-17 (+66d) | 2026-12-31 → 2027-03-14 (+73d) |  | 11d → 14d |  |
| 4 | **Install pole** | 2027-01-02 → 2027-03-15 (+72d) | 2027-01-24 → 2027-04-06 (+72d) |  |  |  |
| SDR-2-CON-CC-ZA-1410 | 35 Meters pole Installation | 2027-01-02 → 2027-03-15 (+72d) | 2027-01-24 → 2027-04-06 (+72d) |  | 11d → 14d |  |
| 5 | **Control Room** | 2026-12-13 → 2027-01-06 (+24d) | 2027-01-06 → 2027-01-28 (+22d) |  |  |  |
| SDR-2-CON-CC-ZA-1500 | Existing Control Room Preparation to accomodate the new equipment | 2026-12-13 → 2027-01-06 (+24d) | 2026-12-19 → 2027-01-12 (+24d) |  | 0d → 2d |  |
| SDR-2-CON-CC-ZA-1510 | VMS Server | 2026-12-13 → 2027-01-06 (+24d) | 2026-12-16 → 2027-01-10 (+25d) |  | 0d → 2d |  |
| SDR-2-CON-CC-ZA-1520 | Surveillance-optimized server for recording CCTV support simultaneous cameras stream and recording at high resolution | 2026-12-14 → 2027-01-07 (+24d) | 2026-12-17 → 2027-01-11 (+25d) |  | 0d → 2d |  |
| SDR-2-CON-CC-ZA-1530 | Video analytic computing hardware | 2026-12-15 → 2027-01-09 (+25d) | 2026-12-19 → 2027-01-12 (+24d) |  | 0d → 2d |  |
| SDR-2-CON-CC-ZA-1540 | Workstation | 2026-12-16 → 2027-01-10 (+25d) | 2026-12-24 → 2027-01-18 (+25d) |  | 0d → 2d |  |
| SDR-2-CON-CC-ZA-1550 | Professional LED screen 32 inch for workstations | 2026-12-17 → 2027-01-11 (+25d) | 2026-12-21 → 2027-01-14 (+24d) |  | 0d → 2d |  |
| SDR-2-CON-CC-ZA-1560 | Professional 55" video wall cube | 2026-12-20 → 2027-01-13 (+24d) | 2026-12-23 → 2027-01-17 (+25d) |  | 0d → 2d |  |
| SDR-2-CON-CC-ZA-1570 | Industrial Rack-Mount Managed Modular Gigabit Ethernet PoE Switch (24-Port) for outdoor application | 2026-12-26 → 2027-01-19 (+24d) | 2027-01-03 → 2027-01-27 (+24d) |  | 0d → 2d |  |
| SDR-2-CON-CC-ZA-1580 | SFP 1000Base-X SM | 2026-12-26 → 2027-01-19 (+24d) | 2027-01-02 → 2027-01-26 (+24d) |  | 0d → 2d |  |
| SDR-2-CON-CC-ZA-1590 | Professional joystick for accurate control of PTZ and PT Thermal Cameras. | 2026-12-27 → 2027-01-20 (+24d) | 2026-12-30 → 2027-01-24 (+25d) |  | 0d → 2d |  |
| SDR-2-CON-CC-ZA-1600 | Fiber patch panel including all related accessories | 2026-12-28 → 2027-01-21 (+24d) | 2027-01-04 → 2027-01-28 (+24d) |  | 0d → 22d | SDR-2-CON-ST-ZA-6160, SDR-2-CON-CC-ZA-1590 SS+1d → SDR-2-CON-CC-ZA-1590 SS+1d |
| SDR-2-CON-CC-ZA-1610 | UPS 5000VA to power for all servers, monitor, and switch in the cabinet | 2026-12-28 → 2027-01-21 (+24d) | 2026-12-31 → 2027-01-25 (+25d) |  | 0d → 22d |  |
| SDR-2-CON-CC-ZA-1620 | Outdoor Carrier Class Shielded Ethernet Cable for P-to-P access points 305 meter | 2026-12-30 → 2027-01-21 (+22d) | 2027-01-06 → 2027-01-28 (+22d) |  | 0d → 44d | SDR-2-CON-CC-ZA-1610 SS+2d → SDR-2-CON-CC-ZA-1610 SS |
| 6 | **Licenses,Documentation,Testing and Training** | 2026-12-31 → 2027-01-25 (+25d) | 2027-01-26 → 2027-01-31 (+5d) |  |  |  |
| SDR-2-CON-CC-ZA-1630 | VMS Lifetime Licenses | 2026-12-31 → 2027-01-25 (+25d) | 2027-01-06 → 2027-01-31 (+25d) |  | 0d → 2d |  |
| SDR-2-CON-CC-ZA-1640 | Camera-Interlink License | 2026-12-31 → 2027-01-25 (+25d) | 2027-01-06 → 2027-01-31 (+25d) |  | 0d → 2d | SDR-2-CON-SL-ZA-3050, SDR-2-CON-CC-ZA-1630 SS → SDR-2-CON-CC-ZA-1630 SS, SDR-2-CON-SL-ZA-1400 |
| SDR-2-CON-CC-ZA-1650 | Video analytics license package | 2027-01-23 → 2027-01-25 (+2d) | 2027-01-26 → 2027-01-28 (+2d) |  | 4d → 2d | SDR-2-CON-SL-ZA-3170, SDR-2-CON-SL-ZA-3090, SDR-2-CON-CC-ZA-1640 SS+1d → SDR-2-CON-SL-ZA-3170, SDR-2-CON-SL-ZA-3090, SDR-2-CON-CC-ZA-1640 SS |
| SDR-2-CON-CC-ZA-1660 | Video analytics license for ANPR | 2027-01-23 → 2027-01-25 (+2d) | 2027-01-26 → 2027-01-28 (+2d) |  | 4d → 2d |  |
| ZG | **ZONE G** | 2026-09-02 → 2026-07-30 (-34d) | 2027-01-25 → 2027-04-06 (+71d) |  |  |  |
| 1 | **Poles 1st and 2nd Fix Works** | 2026-09-02 → 2026-07-30 (-34d) | 2026-10-06 → 2026-10-15 (+9d) |  |  |  |
| 1 | **Excavation** | 2026-09-02 → 2026-07-30 (-34d) | 2026-09-09 → 2026-09-28 (+19d) |  |  |  |

| ID | Task | Start | Finish | Complete | Total float | Predecessors |
| --- | --- | --- | --- | --- | --- | --- |
| SDR-2-CON-CC-ZA-1670 | Excavation 1Sst & 2nd Fix Works | 2026-09-02 → 2026-07-30 A (-34d) | 2026-09-09 → 2026-09-28 (+19d) | 0% → 50% | 0d → 20d | SDR-2-CON-MV-ZA-1000 → SDR-2-CON-MV-ZA-1000 FF |
| 2 | **Install Footings** | 2026-09-10 → 2026-09-03 (-7d) | 2026-09-17 → 2026-09-28 (+11d) |  |  |  |
| SDR-2-CON-CC-ZA-1700 | Install Footings | 2026-09-10 → 2026-09-03 A (-7d) | 2026-09-17 → 2026-09-28 (+11d) | 0% → 30% | 0d → 20d | SDR-2-CON-CC-ZA-1670 → SDR-2-CON-CC-ZA-1670 FF |
| 3 | **Backfilling** | 2026-09-19 → 2026-09-29 (+10d) | 2026-09-27 → 2026-10-06 (+9d) |  |  |  |
| SDR-2-CON-CC-ZA-1720 | Backfilling 1Sst & 2nd Fix Works | 2026-09-19 → 2026-09-29 (+10d) | 2026-09-27 → 2026-10-06 (+9d) |  | 0d → 20d |  |
| 4 | **Install pole** | 2026-09-28 → 2026-10-07 (+9d) | 2026-10-06 → 2026-10-15 (+9d) |  |  |  |
| SDR-2-CON-CC-ZA-1730 | Install Pole | 2026-09-28 → 2026-10-07 (+9d) | 2026-10-06 → 2026-10-15 (+9d) |  | 0d → 20d |  |
| 2 | **25m Pole Package** | 2026-10-07 → 2026-09-03 (-34d) | 2027-01-21 → 2027-01-07 (-14d) |  |  |  |
| 1 | **Excavation** | 2026-10-07 → 2026-09-03 (-34d) | 2026-10-29 → 2026-10-15 (-14d) |  |  |  |
| SDR-2-CON-CC-ZA-1750 | 25 Meters Pole Excavation | 2026-10-07 → 2026-09-03 A (-34d) | 2026-10-29 → 2026-10-15 (-14d) | 0% → 50% | 0d → 20d | SDR-2-CON-CC-ZA-1730 → SDR-2-CON-CC-ZA-1730 FF |
| 2 | **Install Footings** | 2026-10-31 → 2026-10-17 (-14d) | 2026-11-23 → 2026-11-09 (-14d) |  |  |  |
| SDR-2-CON-CC-ZA-1760 | 25 Meters pole installation Footings | 2026-10-31 → 2026-10-17 (-14d) | 2026-11-23 → 2026-11-09 (-14d) |  | 8d → 20d |  |
| 3 | **Backfilling** | 2026-11-24 → 2026-11-10 (-14d) | 2026-12-16 → 2026-12-02 (-14d) |  |  |  |
| SDR-2-CON-CC-ZA-1770 | 25 Meters pole Backfilling | 2026-11-24 → 2026-11-10 (-14d) | 2026-12-16 → 2026-12-02 (-14d) |  | 8d → 20d |  |
| 4 | **Install pole** | 2026-12-29 → 2026-12-15 (-14d) | 2027-01-21 → 2027-01-07 (-14d) |  |  |  |
| SDR-2-CON-CC-ZA-1780 | 25 Meters pole installation | 2026-12-29 → 2026-12-15 (-14d) | 2027-01-21 → 2027-01-07 (-14d) |  | 8d → 20d |  |
| 3 | **7m Pole Package** | 2026-10-07 → 2026-09-03 (-34d) | 2027-01-21 → 2027-02-17 (+27d) |  |  |  |
| 1 | **Excavation** | 2026-10-07 → 2026-09-03 (-34d) | 2026-10-29 → 2026-10-15 (-14d) |  |  |  |
| SDR-2-CON-CC-ZA-1790 | 7m Meters Pole Excavation | 2026-10-07 → 2026-09-03 A (-34d) | 2026-10-29 → 2026-10-15 (-14d) | 0% → 50% | 0d → 25d | SDR-2-CON-CC-ZA-1750 SS → SDR-2-CON-CC-ZA-1750 FF |
| 2 | **Install Footings** | 2026-10-31 → 2026-10-17 (-14d) | 2026-11-22 → 2026-11-08 (-14d) |  |  |  |
| SDR-2-CON-CC-ZA-1800 | 7m Meters pole installation Footings | 2026-10-31 → 2026-10-17 (-14d) | 2026-11-22 → 2026-11-08 (-14d) |  | 0d → 62d |  |
| 3 | **Backfilling** | 2026-11-23 → 2026-11-09 (-14d) | 2026-12-15 → 2026-12-01 (-14d) |  |  |  |
| SDR-2-CON-CC-ZA-1810 | 7m Meters pole Backfilling | 2026-11-23 → 2026-11-09 (-14d) | 2026-12-15 → 2026-12-01 (-14d) |  | 0d → 62d |  |
| 4 | **Install pole** | 2026-12-29 → 2027-01-25 (+27d) | 2027-01-21 → 2027-02-17 (+27d) |  |  |  |
| SDR-2-CON-CC-ZA-1820 | 7 Meters pole Installation | 2026-12-29 → 2027-01-25 (+27d) | 2027-01-21 → 2027-02-17 (+27d) |  | 0d → 27d | SDR-2-CON-SL-ZA-3050, SDR-2-CON-SL-ZA-3010, SDR-2-CON-SL-ZA-2970, SDR-2-CON-SL-ZA-1400, SDR-2-CON-CC-ZA-1810 FS+11d → SDR-2-CON-SL-ZA-3050 SS, SDR-2-CON-SL-ZA-3010, SDR-2-CON-SL-ZA-2970, SDR-2-CON-SL-ZA-1400, SDR-2-CON-CC-ZA-1810 FS+11d |
| 4 | **35m Pole Package** | 2026-10-31 → 2026-09-03 (-58d) | 2027-01-21 → 2026-12-14 (-38d) |  |  |  |
| 1 | **Excavation** | 2026-10-31 → 2026-09-03 (-58d) | 2026-11-23 → 2026-10-15 (-39d) |  |  |  |
| SDR-2-CON-CC-ZA-1830 | 35m Meters Pole Excavation | 2026-10-31 → 2026-09-03 A (-58d) | 2026-11-23 → 2026-10-15 (-39d) | 0% → 50% | 18d → 51d | SDR-2-CON-CC-ZA-1790 → SDR-2-CON-CC-ZA-1790 FF |
| 2 | **Install Footings** | 2026-11-24 → 2026-10-17 (-38d) | 2026-12-16 → 2026-11-08 (-38d) |  |  |  |
| SDR-2-CON-CC-ZA-1840 | 35m Meters pole installation Footings | 2026-11-24 → 2026-10-17 (-38d) | 2026-12-16 → 2026-11-08 (-38d) |  | 18d → 51d |  |
| 3 | **Backfilling** | 2026-11-28 → 2026-10-20 (-39d) | 2026-12-20 → 2026-11-11 (-39d) |  |  |  |
| SDR-2-CON-CC-ZA-1850 | 35m Meters pole Backfilling | 2026-11-28 → 2026-10-20 (-39d) | 2026-12-20 → 2026-11-11 (-39d) |  | 18d → 51d |  |
| 4 | **Install pole** | 2026-12-31 → 2026-11-23 (-38d) | 2027-01-21 → 2026-12-14 (-38d) |  |  |  |
| SDR-2-CON-CC-ZA-1860 | 35 Meters pole Installation | 2026-12-31 → 2026-11-23 (-38d) | 2027-01-21 → 2026-12-14 (-38d) |  | 18d → 51d |  |
| 5 | **Control Room** | 2026-10-31 → 2026-10-17 (-14d) | 2027-01-21 → 2026-12-14 (-38d) |  |  |  |
| SDR-2-CON-CC-ZG-1500 | Existing Control Room Preparation to accomodate the new equipments | 2026-10-31 → 2026-10-17 (-14d) | 2026-11-03 → 2026-10-20 (-14d) |  | 11d → 26d |  |
| SDR-2-CON-CC-ZG-1540 | Workstation | 2026-10-31 → 2026-10-17 (-14d) | 2026-11-12 → 2026-10-29 (-14d) |  | 10d → 25d |  |
| SDR-2-CON-CC-ZG-1550 | Professional LED screen 32 inch for workstations | 2026-10-31 → 2026-10-17 (-14d) | 2026-11-03 → 2026-10-20 (-14d) |  | 10d → 25d |  |
| SDR-2-CON-CC-ZG-1510 | VMS Server | 2026-11-04 → 2026-10-21 (-14d) | 2026-11-09 → 2026-10-26 (-14d) |  | 11d → 26d |  |
| SDR-2-CON-CC-ZG-1560 | Professional 55" video wall cube | 2026-11-04 → 2026-10-21 (-14d) | 2026-11-08 → 2026-10-25 (-14d) |  | 10d → 25d |  |
| SDR-2-CON-CC-ZG-1570 | Industrial Rack-Mount Managed Modular Gigabit Ethernet PoE Switch (24-Port) for outdoor application | 2026-11-07 → 2026-10-24 (-14d) | 2026-11-16 → 2026-11-02 (-14d) |  | 10d → 25d |  |
| SDR-2-CON-CC-ZG-1580 | SFP 1000Base-X SM | 2026-11-07 → 2026-10-24 (-14d) | 2026-11-10 → 2026-10-27 (-14d) |  | 10d → 25d |  |
| SDR-2-CON-CC-ZG-1520 | Surveillance-optimized server for recording CCTV support simultaneous cameras stream and recording at high resolution | 2026-11-10 → 2026-10-27 (-14d) | 2026-11-14 → 2026-10-31 (-14d) |  | 11d → 26d |  |
| SDR-2-CON-CC-ZG-1590 | Professional joystick for accurate control of PTZ and PT Thermal Cameras. | 2026-11-11 → 2026-10-28 (-14d) | 2026-11-15 → 2026-11-01 (-14d) |  | 10d → 25d |  |
| SDR-2-CON-CC-ZG-1530 | Video analytic computing hardware | 2026-11-15 → 2026-11-01 (-14d) | 2026-11-18 → 2026-11-04 (-14d) |  | 19d → 33d |  |
| SDR-2-CON-CC-ZG-1600 | Fiber patch panel including all related accessories | 2026-11-16 → 2026-11-02 (-14d) | 2026-11-19 → 2026-11-05 (-14d) |  | 10d → 25d |  |
| SDR-2-CON-CC-ZG-1610 | UPS 5000VA to power for all servers, monitor, and switch in the cabinet | 2026-11-22 → 2026-11-08 (-14d) | 2026-11-28 → 2026-11-14 (-14d) |  | 10d → 25d |  |
| SDR-2-CON-CC-ZG-1620 | Outdoor Carrier Class Shielded Ethernet Cable for P-to-P access points 305 meter | 2027-01-18 → 2026-12-10 (-39d) | 2027-01-21 → 2026-12-14 (-38d) |  | 18d → 51d |  |
| 6 | **Licenses,Documentation,Testing and Training** | 2026-11-19 → 2026-11-05 (-14d) | 2027-01-25 → 2027-04-06 (+71d) |  |  |  |
| SDR-2-CON-CC-ZG-1630 | VMS Lifetime Licenses | 2026-11-19 → 2026-11-05 (-14d) | 2026-11-21 → 2026-11-07 (-14d) |  | 19d → 33d |  |
| SDR-2-CON-CC-ZG-1640 | Camera-Interlink License | 2026-11-22 → 2026-11-08 (-14d) | 2026-11-22 → 2026-11-08 (-14d) |  | 19d → 33d |  |
| SDR-2-CON-CC-ZG-1650 | Video analytics license package | 2026-11-22 → 2026-11-08 (-14d) | 2026-11-22 → 2026-11-08 (-14d) |  | 19d → 33d |  |
| SDR-2-CON-CC-ZG-1660 | Video analytics license for ANPR | 2027-01-25 → 2027-04-06 (+71d) | 2027-01-25 → 2027-04-06 (+71d) |  | 10d → 14d |  |
| TC | **Testing & Commissioning** | 2027-01-23 → 2027-01-21 (-2d) | 2027-07-05 → 2027-05-27 (-39d) |  |  |  |
| 1 | **Civil Works** | 2027-03-29 → 2027-04-10 (+12d) | 2027-04-01 → 2027-04-13 (+12d) |  |  |  |
| SDR-2-TC-CW-1010 | Testing & Commissioning of road works | 2027-03-29 → 2027-04-10 (+12d) | 2027-04-01 → 2027-04-13 (+12d) |  | 30d → 21d |  |
| 2 | **Storm Water Drainage Network** | 2027-05-05 → 2027-02-24 (-70d) | 2027-05-24 → 2027-03-15 (-70d) |  |  |  |
| SDR-2-TC-SWDN-1020 | Testing & Commissioning of network work | 2027-05-05 → 2027-02-24 (-70d) | 2027-05-24 → 2027-03-15 (-70d) |  | 18d → 73.1d |  |
| 3 | **Sewerage Network** | 2027-04-05 → 2027-04-24 (+19d) | 2027-04-18 → 2027-05-06 (+18d) |  |  |  |
| SDR-2-TC-SN-1030 | Testing & Commissioning of Sewage Network | 2027-04-05 → 2027-04-24 (+19d) | 2027-04-18 → 2027-05-06 (+18d) |  | 28d → 19d |  |
| 4 | **TSE Network** | 2027-05-25 → 2027-05-08 (-17d) | 2027-06-08 → 2027-05-27 (-12d) |  |  |  |
| SDR-2-TC-TSE-1040 | Testing & Commissioning of TSE Network | 2027-05-25 → 2027-05-08 (-17d) | 2027-06-08 → 2027-05-27 (-12d) |  | 9d → 19d |  |
| 5 | **Portable Water** | 2027-05-27 → 2027-05-06 (-21d) | 2027-06-06 → 2027-05-23 (-14d) |  |  |  |
| SDR-2-TC-PW-1050 | Testing & Commissioning of Potable Network | 2027-05-27 → 2027-05-06 (-21d) | 2027-06-06 → 2027-05-23 (-14d) |  | 7d → 19.81d |  |
| 6 | **Electrical Works** | 2027-02-11 → 2027-04-07 (+55d) | 2027-02-18 → 2027-04-14 (+55d) |  |  |  |
| SDR-2-TC-EW-1060 | Testing & Commissioning of Electrical Network | 2027-02-11 → 2027-04-07 (+55d) | 2027-02-18 → 2027-04-14 (+55d) |  |  |  |
| 7 | **Landscape & Irrigation Works** | 2027-06-29 → 2027-05-08 (-52d) | 2027-07-05 → 2027-05-13 (-53d) |  |  |  |
| SDR-2-TC-LIW-1070 | Testing & Commissioning of Landscape & Irrigation Network | 2027-06-29 → 2027-05-08 (-52d) | 2027-07-05 → 2027-05-13 (-53d) |  | 0d → 40d | SDR-2-TC-CCTV-1080, SDR-2-CON-IR-ZA-1010 FS+8d → SDR-2-TC-CCTV-1080, SDR-2-CON-IR-ZA-1010 SS |
| 8 | **CCTV Works** | 2027-01-23 → 2027-01-21 (-2d) | 2027-02-02 → 2027-02-01 (-1d) |  |  |  |
| SDR-2-TC-CCTV-1080 | Testing & Commissioning of medium voltage works | 2027-01-23 → 2027-01-21 (-2d) | 2027-02-02 → 2027-02-01 (-1d) |  | 21d → 22d |  |

| ID | Task | Start | Finish | Total float | Predecessors |
| --- | --- | --- | --- | --- | --- |
| CO | **Close Out** | 2027-02-11 → 2027-04-07 (+55d) |  |  |  |
| 1 | **As Built Drawings** | 2027-02-11 → 2027-04-07 (+55d) | 2027-06-06 → 2027-06-03 (-3d) |  |  |
| 1 | **Civil** | 2027-03-29 → 2027-04-07 (+9d) | 2027-04-11 → 2027-04-20 (+9d) |  |  |
| SDR-2-CLO-AS-C-1000 | Civil As-Built Drawing Submission | 2027-03-29 → 2027-04-07 (+9d) | 2027-04-05 → 2027-04-14 (+9d) | 22d → 14d |  |
| SDR-2-CLO-AS-C-1010 | Civil As-Built Drawing Approvals | 2027-04-06 → 2027-04-15 (+9d) | 2027-04-11 → 2027-04-20 (+9d) | 22d → 14d |  |
| 2 | **Mechanical** | 2027-05-13 → 2027-05-11 (-2d) | 2027-06-06 → 2027-06-03 (-3d) |  |  |
| SDR-2-CLO-AS-M-1000 | Mechanical As-Built Drawing Submission | 2027-05-13 → 2027-05-11 (-2d) | 2027-05-27 → 2027-05-25 (-2d) | 11d → 13d |  |
| SDR-2-CLO-AS-M-1010 | Mechanical As-Built Drawing Approvals | 2027-05-29 → 2027-05-26 (-3d) | 2027-06-06 → 2027-06-03 (-3d) | 11d → 13d |  |
| 3 | **Electrical** | 2027-02-11 → 2027-04-07 (+55d) | 2027-02-28 → 2027-04-22 (+53d) |  |  |
| SDR-2-CLO-AS-E-1000 | Electrical As-Built Drawing Submission | 2027-02-11 → 2027-04-07 (+55d) | 2027-02-18 → 2027-04-14 (+55d) |  |  |
| SDR-2-CLO-AS-E-1010 | Electrical As-Built Drawing Approvals | 2027-02-20 → 2027-04-15 (+54d) | 2027-02-28 → 2027-04-22 (+53d) |  |  |
| 2 | **Training and Manuals** | 2027-06-20 → 2027-06-08 (-12d) | 2027-07-05 → 2027-06-23 (-12d) |  |  |
| SDR-2-CLO-TM-1000 | Training and Manuals | 2027-06-20 → 2027-06-08 (-12d) | 2027-07-05 → 2027-06-23 (-12d) | 0d → 10d | SDR-2-CLO-AS-M-1010, SDR-2-CLO-AS-E-1010 SS, SDR-2-CON-IR-ZA-2130 → SDR-2-CLO-AS-M-1010, SDR-2-CLO-AS-E-1010 SS, SDR-2-CON-IR-ZA-2130 FS+1d |
| 3 | **Demobilize Manpower** | 2027-06-20 → 2027-06-08 (-12d) | 2027-07-05 → 2027-06-23 (-12d) |  |  |
| SDR-2-CLO-DM-1000 | Manpower Demobilize | 2027-06-20 → 2027-06-08 (-12d) | 2027-07-05 → 2027-06-23 (-12d) | 0d → 10d |  |
| 4 | **Demobilize Equipment** | 2027-06-20 → 2027-06-08 (-12d) | 2027-07-05 → 2027-06-23 (-12d) |  |  |
| SDR-2-CLO-DE-1000 | Equipments Demobilize | 2027-06-20 → 2027-06-08 (-12d) | 2027-07-05 → 2027-06-23 (-12d) | 0d → 10d |  |
| 5 | **Removal of Site Offices and Structures** | 2027-06-20 → 2027-06-08 (-12d) | 2027-07-05 → 2027-06-23 (-12d) |  |  |
| SDR-2-CLO-RO-1000 | Site Office Removal | 2027-06-20 → 2027-06-08 (-12d) | 2027-07-05 → 2027-06-23 (-12d) | 0d → 10d |  |
| SDR-2-CLO-HO-1000 | Project Handover |  |  |  | SDR-2-CON-IR-ZA-2980 FF, SDR-2-TC-LIW-1070 FF, SDR-2-CLO-DE-1000 SS, SDR-2-CLO-RO-1000 SS, SDR-2-CON-RW-ZA-1150, SDR-2-CON-RW-ZA-1290, SDR-2-CON-ST-ZA-3310, SDR-2-CON-TS-ZA-1080, SDR-2-CON-TS-ZA-1260, SDR-2-CON-TS-ZA-1710, SDR-2-CON-TS-ZA-1800, SDR-2-CON-TE-ZA-1020, SDR-2-CON-TE-ZA-1060, SDR-2-CON-LS-ZA-1060 SS, SDR-2-CON-CC-ZA-1620, SDR-2-CON-CC-ZA-1660, SDR-2-CON-CC-ZG-1660, SDR-2-TC-CCTV-1080, SDR-2-CON-LS-ZG-1060 SS, SDR-2-CON-PW-ZA-1080, SDR-2-PRO-MAS-C-1100, SDR-2-PRO-MAL-M-1060, SDR-2-PRO-MAL-M-1070, SDR-2-CON-SL-ZA-2690 SS, SDR-2-PRO-MAS-E-1000, SDR-2-PRO-MAL-E-1030, SDR-2-PRO-MAL-E-1130, SDR-2-PRO-MAL-E-1120, SDR-2-CON-CC-ZA-1110 SS, SDR-2-PRO-MAL-E-1170, SDR-2-CON-CC-ZA-1270, SDR-2-CON-CC-ZA-1410 SS, SDR-2-CON-IR-ZA-1030 FF, SDR-2-PRO-MAS-E-1020, SDR-2-CON-SL-ZA-1110, SDR-2-PRO-MAS-C-1080, SDR-2-CON-MV-ZA-1150, SDR-2-PRO-MAL-M-1030, SDR-2-PRO-MAL-M-1040, SDR-2-PRO-MAL-E-1010, SDR-2-PRO-MAL-E-1020, SDR-2-PRO-MAL-E-1180, SDR-2-PRO-MAL-E-1060, SDR-2-CON-RW-ZA-1050, SDR-2-CON-RW-ZA-1200, SDR-2-CON-RW-ZA-1340, SDR-2-CON-RW-ZA-1430, SDR-2-CON-RW-ZA-1480, SDR-2-CON-RW-ZA-1570, SDR-2-CON-RW-ZA-1620, SDR-2-CON-RW-ZA-1710, SDR-2-CON-RW-ZA-1760, SDR-2-CON-RW-ZA-1850, SDR-2-CON-RW-ZA-1900, SDR-2-CON-RW-ZA-1990, SDR-2-CON-RW-ZA-2040, SDR-2-CON-RW-ZA-2130, SDR-2-CON-RW-ZA-2180, SDR-2-CON-RW-ZA-2270, SDR-2-CON-RW-ZA-2320, SDR-2-CON-RW-ZA-2410, SDR-2-CON-RW-ZA-2460, SDR-2-CON-RW-ZA-2550, SDR-2-CON-RW-ZA-2600, SDR-2-CON-RW-ZA-2690, SDR-2-CON-RW-ZA-2740, SDR-2-CON-RW-ZA-2830, SDR-2-CON-RW-ZG-1060, SDR-2-CON-RW-ZG-1210, SDR-2-CON-RW-ZG-1310, SDR-2-CON-RW-ZG-1360, SDR-2-CON-RW-ZG-1460, SDR-2-CON-RW-ZG-1510, SDR-2-CON-RW-ZG-1610, SDR-2-CON-RW-ZG-1660, SDR-2-CON-RW-ZG-1760, SDR-2-CON-RW-ZG-1810, SDR-2-CON-RW-ZG-1910, SDR-2-CON-RW-ZG-1960, SDR-2-CON-RW-ZG-2060, SDR-2-CON-RW-ZG-2110, SDR-2-CON-RW-ZG-2210, SDR-2-CON-ST-ZA-3760, SDR-2-CON-ST-ZA-4130, SDR-2-CON-ST-ZA-4280, SDR-2-CON-ST-ZA-4430, SDR-2-CON-ST-ZA-4580, SDR-2-CON-ST-ZA-4730, SDR-2-CON-ST-ZA-4880, SDR-2-CON-ST-ZA-5030, SDR-2-CON-ST-ZA-5070, SDR-2-CON-ST-ZA-5180, SDR-2-CON-ST-ZA-5220, SDR-2-CON-ST-ZA-5930, SDR-2-CON-ST-ZA-5970, SDR-2-CON-ST-ZA-5480, SDR-2-CON-ST-ZA-5630, SDR-2-CON-ST-ZA-6000, SDR-2-CON-ST-ZA-6080, SDR-2-CON-SE-ZA-1440, SDR-2-CON-SE-ZA-1540, SDR-2-CON-SE-ZA-1740, SDR-2-CON-SE-ZA-1840, SDR-2-CON-SE-ZA-1940, SDR-2-CON-SE-ZA-2040, SDR-2-CON-SE-ZA-2140, SDR-2-CON-SE-ZA-2240, SDR-2-CON-SE-ZA-2340, SDR-2-CON-SE-ZA-2440, SDR-2-CON-TS-ZA-1910, SDR-2-CON-TS-ZA-1070, SDR-2-CON-TS-ZA-2260, SDR-2-CON-TS-ZA-2040, SDR-2-CON-TS-ZA-2090, SDR-2-CON-TS-ZA-2690, SDR-2-CON-TS-ZA-2790, SDR-2-CON-TS-ZA-2890, SDR-2-CON-TS-ZA-1960, SDR-2-CON-TS-ZA-1970, SDR-2-CON-TS-ZA-2140, SDR-2-CON-TS-ZA-1980, SDR-2-CON-TS-ZA-2190, SDR-2-CON-TS-ZA-3190, SDR-2-CON-TS-ZA-2360, SDR-2-CON-TS-ZA-2490, SDR-2-CON-TS-ZA-2990, SDR-2-CON-TS-ZA-3090, SDR-2-CON-TS-ZA-2590, SDR-2-CON-PW-ZA-2320, SDR-2-CON-PW-ZA-2700, SDR-2-CON-PW-ZA-2800, SDR-2-CON-PW-ZA-3250, SDR-2-CON-PW-ZA-3350, SDR-2-CON-PW-ZA-3450, SDR-2-CON-PW-ZA-3550, SDR-2-CON-PW-ZA-3650, SDR-2-CON-PW-ZA-2900, SDR-2-CON-PW-ZA-2420, SDR-2-CON-PW-ZA-2520, SDR-2-CON-PW-ZA-3700, SDR-2-CON-PW-ZA-3000, SDR-2-CON-PW-ZA-3100, SDR-2-CON-PW-ZA-3200, SDR-2-CON-PW-ZA-2620, SDR-2-CON-SL-ZA-1100, SDR-2-CON-SL-ZA-2890, SDR-2-CON-SL-ZA-1400, SDR-2-CON-SL-ZA-2970, SDR-2-CON-SL-ZA-3010, SDR-2-CON-SL-ZA-3050, SDR-2-CON-SL-ZA-3090, SDR-2-CON-SL-ZA-3130, SDR-2-CON-SL-ZA-3170, SDR-2-CON-SL-ZA-3210, SDR-2-CON-SL-ZA-2930, SDR-2-CON-SL-ZA-2780, SDR-2-CON-SL-ZA-2800, SDR-2-CON-SL-ZA-2820, SDR-2-CON-SL-ZA-2840, SDR-2-CON-SL-ZA-2860, SDR-2-CON-MV-ZA-1100, SDR-2-CON-MV-ZA-1180, SDR-2-CON-MV-ZA-1220, SDR-2-CON-MV-ZA-1260, SDR-2-CON-TE-ZA-1840, SDR-2-CON-TE-ZA-3280, SDR-2-CON-TE-ZA-3270, SDR-2-CON-TE-ZA-3370, SDR-2-CON-TE-ZA-3360, SDR-2-CON-TE-ZA-3460, SDR-2-CON-TE-ZA-3450, SDR-2-CON-TE-ZA-3550, SDR-2-CON-TE-ZA-3540, SDR-2-CON-TE-ZA-3640, SDR-2-CON-TE-ZA-3630, SDR-2-CON-TE-ZA-3730, SDR-2-CON-TE-ZA-3720, SDR-2-CON-TE-ZA-3820, SDR-2-CON-TE-ZA-3810, SDR-2-CON-TE-ZA-3910, SDR-2-CON-TE-ZA-3900, SDR-2-CON-TE-ZA-4000, SDR-2-CON-TE-ZA-3990, SDR-2-CON-TE-ZA-4090, SDR-2-CON-TE-ZA-4080, SDR-2-CON-TE-ZA-4180, SDR-2-CON-TE-ZA-4170, SDR-2-CON-SL-ZA-3250, SDR-2-CON-SL-ZA-3290, SDR-2-CON-SL-ZA-3330, SDR-2-CON-SL-ZA-3370, SDR-2-CON-SL-ZA-3410, SDR-2-CON-SL-ZA-3460, SDR-2-CON-SL-ZA-3490, SDR-2-CON-SL-ZA-3520, SDR-2-CON-SL-ZA-3550, SDR-2-CON-SL-ZA-3580, SDR-2-CON-MV-ZA-1300, SDR-2-CON-MV-ZA-1340, SDR-2-CON-TE-ZA-4270, SDR-2-CON-TE-ZA-4260, SDR-2-CON-TE-ZA-4360, SDR-2-CON-TE-ZA-4350, SDR-2-CON-TE-ZA-4450, SDR-2-CON-TE-ZA-4440, SDR-2-CON-TE-ZA-4540, SDR-2-CON-TE-ZA-4530, SDR-2-CON-IR-ZA-2150 FF, SDR-2-CON-IR-ZA-2190 SS, SDR-2-ENG-APP-M-1010, SDR-2-PREL-1100, SDR-2-CON-SE-ZA-1610 → SDR-2-ENG-APP-M-1010, SDR-2-PREL-1100, SDR-2-CON-SE-ZA-1610, SDR-2-CON-IR-ZA-2980 FF, SDR-2-TC-LIW-1070 FF, SDR-2-CLO-DE-1000 SS, SDR-2-CLO-RO-1000 SS, SDR-2-CON-RW-ZA-1150, SDR-2-CON-RW-ZA-1290, SDR-2-CON-ST-ZA-3310, SDR-2-CON-TS-ZA-1080, SDR-2-CON-TS-ZA-1260, SDR-2-CON-TS-ZA-1710, SDR-2-CON-TS-ZA-1800, SDR-2-CON-TE-ZA-1020, SDR-2-CON-TE-ZA-1060, SDR-2-CON-LS-ZA-1060 SS, SDR-2-CON-CC-ZA-1620, SDR-2-CON-CC-ZA-1660, SDR-2-CON-CC-ZG-1660, SDR-2-TC-CCTV-1080, SDR-2-CON-LS-ZG-1060 SS, SDR-2-CON-PW-ZA-1080, SDR-2-PRO-MAS-C-1100, SDR-2-PRO-MAL-M-1060, SDR-2-PRO-MAL-M-1070, SDR-2-CON-SL-ZA-2690 SS, SDR-2-PRO-MAS-E-1000, SDR-2-PRO-MAL-E-1030, SDR-2-PRO-MAL-E-1130, SDR-2-PRO-MAL-E-1120, SDR-2-CON-CC-ZA-1110 SS, SDR-2-PRO-MAL-E-1170, SDR-2-CON-CC-ZA-1270, SDR-2-CON-CC-ZA-1410 SS, SDR-2-CON-IR-ZA-1030 FF, SDR-2-PRO-MAS-E-1020, SDR-2-CON-SL-ZA-1110, SDR-2-PRO-MAS-C-1080, SDR-2-CON-MV-ZA-1150, SDR-2-PRO-MAL-M-1030, SDR-2-PRO-MAL-M-1040, SDR-2-PRO-MAL-E-1010, SDR-2-PRO-MAL-E-1020, SDR-2-PRO-MAL-E-1180, SDR-2-PRO-MAL-E-1060, SDR-2-CON-RW-ZA-1050, SDR-2-CON-RW-ZA-1200, SDR-2-CON-RW-ZA-1340, SDR-2-CON-RW-ZA-1430, SDR-2-CON-RW-ZA-1480, SDR-2-CON-RW-ZA-1570, SDR-2-CON-RW-ZA-1620, SDR-2-CON-RW-ZA-1710, SDR-2-CON-RW-ZA-1760, SDR-2-CON-RW-ZA-1850, SDR-2-CON-RW-ZA-1900, SDR-2-CON-RW-ZA-1990, SDR-2-CON-RW-ZA-2040, SDR-2-CON-RW-ZA-2130, SDR-2-CON-RW-ZA-2180, SDR-2-CON-RW-ZA-2270, SDR-2-CON-RW-ZA-2320, SDR-2-CON-RW-ZA-2410, SDR-2-CON-RW-ZA-2460, SDR-2-CON-RW-ZA-2550, SDR-2-CON-RW-ZA-2600, SDR-2-CON-RW-ZA-2690, SDR-2-CON-RW-ZA-2740, SDR-2-CON-RW-ZA-2830, SDR-2-CON-RW-ZG-1060, SDR-2-CON-RW-ZG-1210, SDR-2-CON-RW-ZG-1310, SDR-2-CON-RW-ZG-1360, SDR-2-CON-RW-ZG-1460, SDR-2-CON-RW-ZG-1510, SDR-2-CON-RW-ZG-1610, SDR-2-CON-RW-ZG-1660, SDR-2-CON-RW-ZG-1760, SDR-2-CON-RW-ZG-1810, SDR-2-CON-RW-ZG-1910, SDR-2-CON-RW-ZG-1960, SDR-2-CON-RW-ZG-2060, SDR-2-CON-RW-ZG-2110, SDR-2-CON-RW-ZG-2210, SDR-2-CON-ST-ZA-3760, SDR-2-CON-ST-ZA-4130, SDR-2-CON-ST-ZA-4280, SDR-2-CON-ST-ZA-4430, SDR-2-CON-ST-ZA-4580, SDR-2-CON-ST-ZA-4730, SDR-2-CON-ST-ZA-4880, SDR-2-CON-ST-ZA-5030, SDR-2-CON-ST-ZA-5070, SDR-2-CON-ST-ZA-5180, SDR-2-CON-ST-ZA-5220, SDR-2-CON-ST-ZA-5930, SDR-2-CON-ST-ZA-5970, SDR-2-CON-ST-ZA-5480, SDR-2-CON-ST-ZA-5630, SDR-2-CON-ST-ZA-6000, SDR-2-CON-ST-ZA-6080, SDR-2-CON-SE-ZA-1440, SDR-2-CON-SE-ZA-1540, SDR-2-CON-SE-ZA-1740, SDR-2-CON-SE-ZA-1840, SDR-2-CON-SE-ZA-1940, SDR-2-CON-SE-ZA-2040, SDR-2-CON-SE-ZA-2140, SDR-2-CON-SE-ZA-2240, SDR-2-CON-SE-ZA-2340, SDR-2-CON-SE-ZA-2440, SDR-2-CON-TS-ZA-1910, SDR-2-CON-TS-ZA-1070, SDR-2-CON-TS-ZA-2260, SDR-2-CON-TS-ZA-2040, SDR-2-CON-TS-ZA-2090, SDR-2-CON-TS-ZA-2690, SDR-2-CON-TS-ZA-2890, SDR-2-CON-TS-ZA-1960, SDR-2-CON-TS-ZA-1970, SDR-2-CON-TS-ZA-2140, SDR-2-CON-TS-ZA-1980, SDR-2-CON-TS-ZA-2190, SDR-2-CON-TS-ZA-3190, SDR-2-CON-TS-ZA-2360, SDR-2-CON-TS-ZA-2490, SDR-2-CON-TS-ZA-2990, SDR-2-CON-TS-ZA-3090, SDR-2-CON-TS-ZA-2590, SDR-2-CON-PW-ZA-2320, SDR-2-CON-PW-ZA-2700, SDR-2-CON-PW-ZA-2800, SDR-2-CON-PW-ZA-3250, SDR-2-CON-PW-ZA-3350, SDR-2-CON-PW-ZA-3450, SDR-2-CON-PW-ZA-3550, SDR-2-CON-PW-ZA-3650, SDR-2-CON-PW-ZA-2900, SDR-2-CON-PW-ZA-2420, SDR-2-CON-PW-ZA-2520, SDR-2-CON-PW-ZA-3700, SDR-2-CON-PW-ZA-3000, SDR-2-CON-PW-ZA-3100, SDR-2-CON-PW-ZA-3200, SDR-2-CON-PW-ZA-2620, SDR-2-CON-SL-ZA-1100, SDR-2-CON-SL-ZA-2890, SDR-2-CON-SL-ZA-1400, SDR-2-CON-SL-ZA-2970, SDR-2-CON-SL-ZA-3010, SDR-2-CON-SL-ZA-3050, SDR-2-CON-SL-ZA-3090, SDR-2-CON-SL-ZA-3130, SDR-2-CON-SL-ZA-3170, SDR-2-CON-SL-ZA-3210, SDR-2-CON-SL-ZA-2930, SDR-2-CON-SL-ZA-2780, SDR-2-CON-SL-ZA-2800, SDR-2-CON-SL-ZA-2820, SDR-2-CON-SL-ZA-2840, SDR-2-CON-SL-ZA-2860, SDR-2-CON-MV-ZA-1100, SDR-2-CON-MV-ZA-1180, SDR-2-CON-MV-ZA-1220, SDR-2-CON-MV-ZA-1260, SDR-2-CON-TE-ZA-1840, SDR-2-CON-TE-ZA-3280, SDR-2-CON-TE-ZA-3270, SDR-2-CON-TE-ZA-3370, SDR-2-CON-TE-ZA-3360, SDR-2-CON-TE-ZA-3460, SDR-2-CON-TE-ZA-3450, SDR-2-CON-TE-ZA-3550, SDR-2-CON-TE-ZA-3540, SDR-2-CON-TE-ZA-3640, SDR-2-CON-TE-ZA-3630, SDR-2-CON-TE-ZA-3730, SDR-2-CON-TE-ZA-3720, SDR-2-CON-TE-ZA-3820, SDR-2-CON-TE-ZA-3810, SDR-2-CON-TE-ZA-3910, SDR-2-CON-TE-ZA-3900, SDR-2-CON-TE-ZA-4000, SDR-2-CON-TE-ZA-3990, SDR-2-CON-TE-ZA-4090, SDR-2-CON-TE-ZA-4080, SDR-2-CON-TE-ZA-4180, SDR-2-CON-TE-ZA-4170, SDR-2-CON-SL-ZA-3250, SDR-2-CON-SL-ZA-3290, SDR-2-CON-SL-ZA-3330, SDR-2-CON-SL-ZA-3370, SDR-2-CON-SL-ZA-3410, SDR-2-CON-SL-ZA-3460, SDR-2-CON-SL-ZA-3490, SDR-2-CON-SL-ZA-3520, SDR-2-CON-SL-ZA-3550, SDR-2-CON-SL-ZA-3580, SDR-2-CON-MV-ZA-1300, SDR-2-CON-MV-ZA-1340, SDR-2-CON-TE-ZA-4270, SDR-2-CON-TE-ZA-4260, SDR-2-CON-TE-ZA-4360, SDR-2-CON-TE-ZA-4350, SDR-2-CON-TE-ZA-4450, SDR-2-CON-TE-ZA-4440, SDR-2-CON-TE-ZA-4540, SDR-2-CON-TE-ZA-4530, SDR-2-CON-IR-ZA-2150 FF, SDR-2-CON-IR-ZA-2190 SS+1d |

## Version 3 (data date 2026-10-05, saved 2026-10-05, file Sudair 2 P2 05.10.26 INFRA.xer)

Last finish stays 2027-07-05. Complete tasks 691 → 711.

Changed:

| ID | Task | Start | Finish | Total float |
| --- | --- | --- | --- | --- |
| 3 | **Contractual Milestone** |  | 2027-07-04 → 2027-06-29 (-5d) |  |
| SDR-2-MILS-1060 | Completion of medium voltage works | 2027-01-28 → 2027-02-04 (+7d) | 2027-01-28 → 2027-02-04 (+7d) | 44d → 39d |
| SDR-2-MILS-1050 | Completion of road works | 2027-03-28 → 2027-04-03 (+6d) | 2027-03-28 → 2027-04-03 (+6d) | 34d → 30d |
| SDR-2-MILS-1070 | Completion of All Network work | 2027-04-22 → 2027-04-28 (+6d) | 2027-04-22 → 2027-04-28 (+6d) | 58d → 53d |
| SDR-2-MILS-1080 | Completion of finishing works in the project | 2027-07-04 → 2027-06-29 (-5d) | 2027-07-04 → 2027-06-29 (-5d) | 1d → 5.7d |
| 2 | **Phases Milestone** | 2026-09-28 → 2026-10-05 (+7d) |  |  |
| SDR-2-MILS-1090 | Engineering Phase Finish Milestone | 2026-09-28 → 2026-10-05 (+7d) | 2026-09-28 → 2026-10-05 (+7d) | 70d → 71d |
| SDR-2-MILS-1100 | Procurment Phase Finish Milestone | 2026-11-04 → 2026-11-11 (+7d) | 2026-11-04 → 2026-11-11 (+7d) | 71.1d → 66.1d |
| EN | **Engineering** |  | 2026-09-28 → 2026-10-05 (+7d) |  |
| 1 | **Shop Drawings Stage** |  | 2026-09-28 → 2026-10-05 (+7d) |  |
| 4 | **Approvals** |  | 2026-09-28 → 2026-10-05 (+7d) |  |
| 9 | **Electrical** |  | 2026-09-28 → 2026-10-05 (+7d) |  |
| SDR-2-ENG-APP-E-1000 | MV Network Layout Approval |  | 2026-09-28 → 2026-10-05 (+7d) | 2d → 0d |
| SDR-2-ENG-APP-E-1010 | MV Single Line Diagram Approval |  | 2026-09-28 → 2026-10-05 (+7d) | 2d → 0d |
| SDR-2-ENG-APP-E-1020 | Design Of MV Loops Approval |  | 2026-09-28 → 2026-10-05 (+7d) | 2d → 0d |
| SDR-2-ENG-APP-E-1030 | Loads For Plots Approval |  | 2026-09-28 → 2026-10-05 (+7d) | 2d → 0d |
| SDR-2-ENG-APP-E-1040 | Distribution Substation Approval |  | 2026-09-28 → 2026-10-05 (+7d) | 2d → 0d |
| SDR-2-ENG-APP-E-1050 | MV Trench Configuration Details Approval |  | 2026-09-28 → 2026-10-05 (+7d) | 2d → 0d |
| SDR-2-ENG-APP-E-1060 | MV Electrical Duct Banks Details Approval |  | 2026-09-28 → 2026-10-05 (+7d) | 2d → 0d |
| SDR-2-ENG-APP-E-1070 | Distribution Transformers Approval |  | 2026-09-28 → 2026-10-05 (+7d) | 2d → 0d |
| 11 | **CCTV** |  | 2026-09-28 → 2026-10-05 (+7d) |  |
| SDR-2-ENG-APP-E-1280 | Typical Solar Panel Installation Detail Approval |  | 2026-09-28 → 2026-10-05 (+7d) | 2d → 0d |
| 3 | **Materials** |  | 2026-09-28 → 2026-10-05 (+7d) |  |
| 6 | **Materials Approval** |  | 2026-09-28 → 2026-10-05 (+7d) |  |
| 2 | **Short Lead Items** |  | 2026-09-28 → 2026-10-05 (+7d) |  |
| 1 | **Civil** |  | 2026-09-28 → 2026-10-05 (+7d) |  |
| SDR-2-PRO-MAS-C-1030 | Road Marking Approve |  | 2026-09-28 → 2026-10-05 (+7d) | 2d → 0d |
| SDR-2-PRO-MAS-C-1060 | Traffic Signage Approve |  | 2026-09-28 → 2026-10-05 (+7d) | 2d → 0d |
| PR | **Procurement** |  | 2027-01-17 → 2027-01-24 (+7d) |  |
| 3 | **Purchase Order** |  | 2026-09-28 → 2026-10-05 (+7d) |  |
| 1 | **Civil** |  | 2026-09-28 → 2026-10-05 (+7d) |  |
| SDR-2-PRO-PO-C-1020 | Asphalt Mix PO |  | 2026-09-28 → 2026-10-05 (+7d) | 69d → 70d |
| SDR-2-PRO-PO-C-1030 | Kerbstone PO |  | 2026-09-28 → 2026-10-05 (+7d) | 38.9d → 33.9d |
| SDR-2-PRO-PO-C-1050 | Interlock Tiles PO |  | 2026-09-28 → 2026-10-05 (+7d) | 91d → 92d |
| SDR-2-PRO-PO-C-1100 | Protection (Guard rail) for Fire hydrant PO |  | 2026-09-28 → 2026-10-05 (+7d) | 0d → 1d |
| SDR-2-PRO-PO-C-1060 | Traffic Signage PO |  | 2026-09-28 → 2026-10-05 (+7d) |  |
| SDR-2-PRO-PO-C-1040 | Road Marking PO |  | 2026-09-28 → 2026-10-05 (+7d) | 2d → 3d |
| SDR-2-PRO-PO-C-1080 | Fence for Electrical works PO |  | 2026-09-28 → 2026-10-05 (+7d) | 28d → 42d |
| SDR-2-PRO-PO-C-1090 | Protection Bollards for CCTV Pole PO |  | 2026-09-28 → 2026-10-05 (+7d) | 100d → 94d |
| 3 | **Electrical** |  | 2026-09-28 → 2026-10-05 (+7d) |  |
| SDR-2-PRO-PO-E-1100 | Unit Substation PO |  | 2026-09-28 → 2026-10-05 (+7d) | 17d → 11d |
| SDR-2-PRO-PO-E-1150 | CCTV Poles including all hardwares PO |  | 2026-09-28 → 2026-10-05 (+7d) | 57d → 72d |
| SDR-2-PRO-PO-E-1160 | CCTV Cables "Power" PO |  | 2026-09-28 → 2026-10-05 (+7d) | 57d → 72d |
| SDR-2-PRO-PO-E-1170 | CCTV Cables "CAT6" PO |  | 2026-09-28 → 2026-10-05 (+7d) | 18.9d → 27.9d |
| SDR-2-PRO-PO-E-1190 | CCTV System,Servers & WorkStations PO |  | 2026-09-28 → 2026-10-05 (+7d) | 63d → 78d |
| SDR-2-PRO-PO-E-1200 | Professional 55" Video wall at control room PO |  | 2026-09-28 → 2026-10-05 (+7d) | 52d → 51d |
| SDR-2-PRO-PO-E-1210 | CCTV Switches PO |  | 2026-09-28 → 2026-10-05 (+7d) | 63d → 78d |
| SDR-2-PRO-PO-E-1220 | CCTV Wireless P2P bridges PO |  | 2026-09-28 → 2026-10-05 (+7d) | 63d → 78d |
| SDR-2-PRO-PO-E-1230 | CCTV UPS PO |  | 2026-09-28 → 2026-10-05 (+7d) | 51d → 46d |
| SDR-2-PRO-PO-E-1240 | CCTV Solar System PO |  | 2026-09-28 → 2026-10-05 (+7d) | 74d → 75d |
| SDR-2-PRO-PO-E-1120 | KWH Meter with mounting frame PO |  | 2026-09-28 → 2026-10-05 (+7d) | 7d → 8d |
| SDR-2-PRO-PO-E-1140 | PECD Ducts for CCTV network PO |  | 2026-09-28 → 2026-10-05 (+7d) | 5.9d → 15d |
| SDR-2-PRO-PO-E-1180 | Racks and Patch panels PO |  | 2026-09-28 → 2026-10-05 (+7d) | 57d → 72d |
| SDR-2-PRO-PO-E-1130 | Main Feeder Pillar PO |  | 2026-09-28 → 2026-10-05 (+7d) | 2d → 17d |
| 1 | **Delivery to Site** |  | 2027-01-13 → 2027-01-20 (+7d) |  |
| 2 | **Short Lead Items Delivery** |  | 2027-01-13 → 2027-01-20 (+7d) |  |
| 1 | **Civil** |  | 2027-01-13 → 2027-01-20 (+7d) |  |
| SDR-2-PRO-DES-C-1020 | Asphalt Mix Delivery |  | 2026-12-15 → 2026-12-22 (+7d) | 3.1d → 4.1d |
| SDR-2-PRO-DES-C-1030 | Kerbstone Delivery |  | 2026-11-07 → 2026-11-14 (+7d) | 5d → 0d |
| SDR-2-PRO-DES-C-1050 | Interlock Tiles Delivery |  | 2026-10-18 → 2026-10-25 (+7d) | 86.1d → 87.1d |
| SDR-2-PRO-DES-C-1090 | Protection Bollards for CCTV Pole Delivery | 2026-09-29 → 2026-10-06 (+7d) | 2026-10-15 → 2026-10-22 (+7d) | 117d → 110d |
| SDR-2-PRO-DES-C-1100 | Protection (Guard rail) for Fire hydrant Delivery | 2026-10-13 → 2026-10-20 (+7d) | 2026-12-11 → 2026-12-18 (+7d) | 0d → 1d |
| SDR-2-PRO-DES-C-1040 | Road Marking Delivery | 2026-10-16 → 2026-10-23 (+7d) | 2027-01-13 → 2027-01-20 (+7d) | 3d → 4d |
| SDR-2-PRO-DES-C-1080 | Fence for Electrical works Delivery | 2026-10-18 → 2026-10-25 (+7d) | 2026-11-15 → 2026-11-22 (+7d) | 32d → 49d |
| SDR-2-PRO-DES-C-1060 | Traffic Signage Manufacture and Delivery | 2026-10-23 → 2026-10-30 (+7d) | 2026-11-11 → 2026-11-18 (+7d) | 14d → 15d |
| 3 | **Electrical** |  | 2026-09-30 → 2026-10-07 (+7d) |  |
| SDR-2-PRO-DES-E-1020 | PECD Ducts for CCTV network Delivery |  | 2026-09-30 → 2026-10-07 (+7d) | 5d → 16d |
| 5 | **Long Lead Items Delivery** |  | 2026-12-06 → 2026-12-13 (+7d) |  |
| 3 | **Electrical** |  | 2026-12-06 → 2026-12-13 (+7d) |  |
| SDR-2-PRO-DEL-E-1110 | CCTV Poles including all hardwares Delivery |  | 2026-11-04 → 2026-11-11 (+7d) | 29.1d → 47.1d |

| ID | Task | Start | Finish | Complete | Total float |
| --- | --- | --- | --- | --- | --- |
| SDR-2-PRO-DEL-E-1120 | CCTV Cables "Power" Delivery |  | 2026-11-04 → 2026-11-11 (+7d) |  | 29.1d → 47.1d |
| SDR-2-PRO-DEL-E-1130 | CCTV Cables "CAT6" Delivery |  | 2026-10-15 → 2026-10-22 (+7d) |  | 5d → 16d |
| SDR-2-PRO-DEL-E-1140 | Racks and Patch panels Delivery |  | 2026-10-20 → 2026-10-27 (+7d) |  | 44.1d → 62.1d |
| SDR-2-PRO-DEL-E-1150 | CCTV System,Servers & WorkStations Delivery |  | 2026-10-20 → 2026-10-27 (+7d) |  | 52.1d → 69.1d |
| SDR-2-PRO-DEL-E-1160 | Professional 55" Video wall at control room Delivery |  | 2026-10-20 → 2026-10-27 (+7d) |  | 39.1d → 37.1d |
| SDR-2-PRO-DEL-E-1170 | CCTV Switches Delivery |  | 2026-10-20 → 2026-10-27 (+7d) |  | 52.1d → 69.1d |
| SDR-2-PRO-DEL-E-1180 | CCTV Wireless P2P bridges Delivery |  | 2026-10-20 → 2026-10-27 (+7d) |  | 52.1d → 69.1d |
| SDR-2-PRO-DEL-E-1190 | CCTV UPS Delivery |  | 2026-10-20 → 2026-10-27 (+7d) |  | 38.1d → 32.1d |
| SDR-2-PRO-DEL-E-1200 | CCTV Solar System Delivery |  | 2026-10-25 → 2026-11-01 (+7d) |  | 59.1d → 61.1d |
| SDR-2-PRO-DEL-E-1020 | Street Lighting Poles Delivery | 2026-09-28 → 2026-10-05 (+7d) | 2026-12-06 → 2026-12-13 (+7d) |  | 16d → 9d |
| SDR-2-PRO-DEL-E-1030 | Street Lighting Fixtures Delivery | 2026-09-28 → 2026-10-05 (+7d) | 2026-12-06 → 2026-12-13 (+7d) |  | 16d → 9d |
| SDR-2-PRO-DEL-E-1080 | Lighting Panels Delivery | 2026-09-28 → 2026-10-05 (+7d) | 2026-12-01 → 2026-12-08 (+7d) |  | 2d → 20d |
| SDR-2-PRO-DEL-E-1070 | Unit Substation Delivery | 2026-09-29 → 2026-10-06 (+7d) | 2026-12-02 → 2026-12-09 (+7d) |  | 20d → 13d |
| SDR-2-PRO-DEL-E-1090 | KWH Meter with mounting frame Delivery | 2026-09-29 → 2026-10-06 (+7d) | 2026-11-17 → 2026-11-24 (+7d) |  | 8d → 9d |
| SDR-2-PRO-DEL-E-1100 | Main Feeder Pillar Manufacture and Delivery | 2026-10-13 → 2026-10-20 (+7d) | 2026-12-01 → 2026-12-08 (+7d) |  | 2d → 20d |
| 2 | **Mechanical** |  | 2026-09-28 → 2026-10-05 (+7d) |  |  |
| SDR-2-PRO-DEL-M-1030 | Manhole Delivery |  | 2026-09-28 → 2026-10-05 (+7d) |  | 49d → 50d |
| SDR-2-PRO-DEL-M-1050 | Manhole, Catch basin and Valve box Cover Delivery |  | 2026-09-28 → 2026-10-05 (+7d) |  | 49d → 50d |
| SDR-2-PRO-DEL-M-1060 | Fire Hydrant Delivery |  | 2026-09-28 → 2026-10-05 (+7d) |  | 66d → 84d |
| SDR-2-PRO-DEL-M-1070 | Valve of Fire Hydrant Delivery |  | 2026-09-28 → 2026-10-05 (+7d) |  | 66d → 84d |
| SDR-2-PRO-DEL-M-1020 | Valves Delivery |  | 2026-09-28 → 2026-10-05 (+7d) |  | 58d → 59d |
| SDR-2-PRO-DEL-M-1040 | Catch Basin Delivery |  | 2026-09-28 → 2026-10-05 (+7d) |  | 5d → 0d |
| 4 | **Materials Staging Time** |  | 2027-01-17 → 2027-01-24 (+7d) |  |  |
| 1 | **Civil** |  | 2027-01-17 → 2027-01-24 (+7d) |  |  |
| SDR-2-PRO-ST-C-1030 | Kerbstone staging |  | 2026-11-07 → 2026-11-14 (+7d) |  | 49.1d → 50.1d |
| SDR-2-PRO-ST-C-1050 | Interlock Tiles staging | 2026-10-18 → 2026-10-25 (+7d) | 2026-10-22 → 2026-10-29 (+7d) |  | 86.1d → 87.1d |
| SDR-2-PRO-ST-C-1090 | Protection Bollards for CCTV Pole staging | 2026-10-20 → 2026-10-27 (+7d) | 2026-10-23 → 2026-10-30 (+7d) |  | 117d → 110d |
| SDR-2-PRO-ST-C-1060 | Traffic Signage staging | 2026-11-12 → 2026-11-19 (+7d) | 2026-11-15 → 2026-11-22 (+7d) |  | 119d → 120d |
| SDR-2-PRO-ST-C-1080 | Fence for Electrical works staging | 2026-11-16 → 2026-11-23 (+7d) | 2026-11-19 → 2026-11-26 (+7d) |  | 32d → 49d |
| SDR-2-PRO-ST-C-1100 | Protection (Guard rail) for Fire hydrant staging | 2026-12-12 → 2026-12-19 (+7d) | 2026-12-15 → 2026-12-22 (+7d) |  | 0d → 1d |
| SDR-2-PRO-ST-C-1020 | Asphalt Mix staging | 2026-12-15 → 2026-12-22 (+7d) | 2026-12-15 → 2026-12-22 (+7d) |  | 3.1d → 4.1d |
| SDR-2-PRO-ST-C-1040 | Road Marking staging | 2027-01-14 → 2027-01-21 (+7d) | 2027-01-17 → 2027-01-24 (+7d) |  | 23d → 24d |
| 2 | **Mechanical** |  | 2026-09-28 → 2026-10-05 (+7d) |  |  |
| SDR-2-PRO-ST-M-1050 | Manhole, Catch basin and Valve box Cover staging |  | 2026-09-28 → 2026-10-05 (+7d) |  | 58d → 59d |
| SDR-2-PRO-ST-M-1030 | Manhole staging |  | 2026-09-28 → 2026-10-05 (+7d) |  | 214d → 209d |
| SDR-2-PRO-ST-M-1020 | Valves staging |  | 2026-09-28 → 2026-10-05 (+7d) |  | 89d → 83d |
| SDR-2-PRO-ST-M-1060 | Fire Hydrant staging |  | 2026-09-28 → 2026-10-05 (+7d) |  | 134d → 127d |
| SDR-2-PRO-ST-M-1070 | Valve of Fire Hydrant staging |  | 2026-09-28 → 2026-10-05 (+7d) |  | 134d → 127d |
| SDR-2-PRO-ST-M-1040 | Catch Basin staging |  | 2026-09-28 → 2026-10-05 (+7d) |  | 129d → 124d |
| 3 | **Electrical** |  | 2026-11-27 → 2026-12-04 (+7d) |  |  |
| SDR-2-PRO-ST-E-1000 | MV Cables staging |  | 2026-09-28 → 2026-10-05 (+7d) |  | 39d → 35d |
| SDR-2-PRO-ST-E-1020 | LV Cables staging |  | 2026-09-28 → 2026-10-05 (+7d) |  | 52d → 47d |
| SDR-2-PRO-ST-E-1070 | Concrete Manholes & DrawPits for Telecom Network staging |  | 2026-09-28 → 2026-10-05 (+7d) |  | 58d → 59d |
| SDR-2-PRO-ST-E-1010 | Termination Kits & Joints staging | 2026-09-28 → 2026-10-05 (+7d) | 2026-10-07 → 2026-10-14 (+7d) |  | 30d → 26d |
| SDR-2-PRO-ST-E-1030 | Street Lighting Poles staging | 2026-09-28 → 2026-10-05 (+7d) | 2026-10-07 → 2026-10-14 (+7d) |  | 43d → 38d |
| SDR-2-PRO-ST-E-1040 | Street Lighting Fixtures staging | 2026-09-28 → 2026-10-05 (+7d) | 2026-10-07 → 2026-10-14 (+7d) |  | 43d → 38d |
| SDR-2-PRO-ST-E-1110 | Lighting Panels staging | 2026-09-28 → 2026-10-05 (+7d) | 2026-10-07 → 2026-10-14 (+7d) |  |  |
| SDR-2-PRO-ST-E-1100 | Unit Substation staging | 2026-09-29 → 2026-10-06 (+7d) | 2026-10-08 → 2026-10-15 (+7d) |  | 67d → 60d |
| SDR-2-PRO-ST-E-1140 | PECD Ducts for CCTV network staging | 2026-09-30 → 2026-10-07 (+7d) | 2026-10-10 → 2026-10-17 (+7d) |  | 54.1d → 72.1d |
| SDR-2-PRO-ST-E-1130 | Main Feeder Pillar staging | 2026-10-15 → 2026-10-22 (+7d) | 2026-10-24 → 2026-10-31 (+7d) |  | 49d → 42d |
| SDR-2-PRO-ST-E-1170 | CCTV Cables "CAT6" staging | 2026-10-15 → 2026-10-22 (+7d) | 2026-10-25 → 2026-11-01 (+7d) |  | 39.1d → 57.1d |
| SDR-2-PRO-ST-E-1180 | Racks and Patch panels staging | 2026-10-20 → 2026-10-27 (+7d) | 2026-10-30 → 2026-11-06 (+7d) |  | 52.1d → 69.1d |
| SDR-2-PRO-ST-E-1190 | CCTV System,Servers & WorkStations staging | 2026-10-20 → 2026-10-27 (+7d) | 2026-10-30 → 2026-11-06 (+7d) |  | 52.1d → 69.1d |
| SDR-2-PRO-ST-E-1200 | Professional 55" Video wall at control room staging | 2026-10-20 → 2026-10-27 (+7d) | 2026-10-30 → 2026-11-06 (+7d) |  | 43.1d → 37.1d |
| SDR-2-PRO-ST-E-1210 | CCTV Switches staging | 2026-10-20 → 2026-10-27 (+7d) | 2026-10-30 → 2026-11-06 (+7d) |  | 52.1d → 69.1d |
| SDR-2-PRO-ST-E-1220 | CCTV Wireless P2P bridges staging | 2026-10-20 → 2026-10-27 (+7d) | 2026-10-30 → 2026-11-06 (+7d) |  | 52.1d → 69.1d |
| SDR-2-PRO-ST-E-1230 | CCTV UPS staging | 2026-10-20 → 2026-10-27 (+7d) | 2026-10-30 → 2026-11-06 (+7d) |  | 52.1d → 69.1d |
| SDR-2-PRO-ST-E-1240 | CCTV Solar System staging | 2026-10-25 → 2026-11-01 (+7d) | 2026-11-04 → 2026-11-11 (+7d) |  | 65.1d → 77.1d |
| SDR-2-PRO-ST-E-1150 | CCTV Poles including all hardwares staging | 2026-11-04 → 2026-11-11 (+7d) | 2026-11-14 → 2026-11-21 (+7d) |  | 37.1d → 54.1d |
| SDR-2-PRO-ST-E-1160 | CCTV Cables "Power" staging | 2026-11-04 → 2026-11-11 (+7d) | 2026-11-14 → 2026-11-21 (+7d) |  | 37.1d → 54.1d |
| SDR-2-PRO-ST-E-1120 | KWH Meter with mounting frame staging | 2026-11-18 → 2026-11-25 (+7d) | 2026-11-27 → 2026-12-04 (+7d) |  | 16d → 9d |
| CON | **Construction** |  | 2027-07-04 → 2027-07-05 (+1d) |  |  |
| RO | **ROAD WORKS** |  | 2027-04-13 → 2027-04-19 (+6d) |  |  |
| ZA | **ZONE A** |  | 2027-04-12 → 2027-04-19 (+7d) |  |  |
| 1 | **ROAD WORKS IN ( PH2-COL-MC10 )** |  | 2027-04-10 → 2027-04-17 (+7d) |  |  |
| SDR-2-CON-RW-ZA-1070 | Aggregate base course layer |  | 2026-10-01 A | 80% → 100% | 54.1d → none |
| 8 | **Demolition Work** | 2026-10-01 → 2026-10-05 (+4d) | 2026-10-15 → 2026-10-18 (+3d) |  |  |
| SDR-2-CON-RW-ZA-1080 | Milling of wearing course | 2026-10-01 → 2026-10-05 (+4d) | 2026-10-15 → 2026-10-18 (+3d) |  | 54.1d → 59d |
| 3 | **Asphalt Works** | 2026-12-15 → 2026-12-22 (+7d) | 2027-01-20 → 2027-01-27 (+7d) |  |  |
| SDR-2-CON-RW-ZA-1090 | Asphalt works 2st Layer with RC-01 | 2026-12-15 → 2026-12-22 (+7d) | 2027-01-03 → 2027-01-10 (+7d) |  | 2.1d → 3.1d |

| ID | Task | Start | Finish | Complete | Total float |
| --- | --- | --- | --- | --- | --- |
| SDR-2-CON-RW-ZA-1100 | Asphalt works 3nd layer with RC-02 | 2026-12-27 → 2027-01-03 (+7d) | 2027-01-20 → 2027-01-27 (+7d) |  | 2.1d → 3.1d |
| 4 | **Kerbstone Installation** | 2026-11-07 → 2026-11-14 (+7d) | 2027-02-07 → 2027-02-14 (+7d) |  |  |
| SDR-2-CON-RW-ZA-3400 | Kerbstone Installation "all Types" Part1 | 2026-11-07 → 2026-11-14 (+7d) | 2026-11-28 → 2026-12-05 (+7d) |  | 42.1d → 43.1d |
| SDR-2-CON-RW-ZA-1110 | Kerbstone Installation "all Types" Part2 | 2027-01-13 → 2027-01-20 (+7d) | 2027-02-07 → 2027-02-14 (+7d) |  | 2.1d → 3.1d |
| 5 | **Interlock Installation** | 2027-01-14 → 2027-01-21 (+7d) | 2027-02-07 → 2027-02-14 (+7d) |  |  |
| SDR-2-CON-RW-ZA-1120 | Interlock Installation | 2027-01-14 → 2027-01-21 (+7d) | 2027-02-07 → 2027-02-14 (+7d) |  | 2d → 3d |
| 6 | **Road Marking** | 2027-02-08 → 2027-02-15 (+7d) | 2027-03-17 → 2027-03-24 (+7d) |  |  |
| SDR-2-CON-RW-ZA-1130 | Retroreflective Thermoplastic White Traffic lines | 2027-02-08 → 2027-02-15 (+7d) | 2027-02-24 → 2027-03-03 (+7d) |  | 2d → 3d |
| SDR-2-CON-RW-ZA-1140 | Retroreflective Thermoplastic Yellow, Traffic lines | 2027-02-25 → 2027-03-04 (+7d) | 2027-03-17 → 2027-03-24 (+7d) |  | 2d → 3d |
| 7 | **Traffic Signage** | 2027-03-18 → 2027-03-25 (+7d) | 2027-04-10 → 2027-04-17 (+7d) |  |  |
| SDR-2-CON-RW-ZA-1150 | Single post-Traffic signs Installation | 2027-03-18 → 2027-03-25 (+7d) | 2027-04-10 → 2027-04-17 (+7d) |  | 2d → 3d |
| 8 | **ROAD WORKS IN ( PH2-COL-MC20 )** |  | 2027-04-12 → 2027-04-19 (+7d) |  |  |
| 2 | **Base Course** |  | 2026-10-19 → 2026-10-26 (+7d) |  |  |
| SDR-2-CON-RW-ZA-1210 | Aggregate base course layer |  | 2026-10-19 → 2026-10-26 (+7d) | 20% → 70% | 15d → 16d |
| 8 | **Demolition Work** | 2026-10-20 → 2026-10-27 (+7d) | 2026-10-26 → 2026-11-02 (+7d) |  |  |
| SDR-2-CON-RW-ZA-1220 | Milling of wearing course | 2026-10-20 → 2026-10-27 (+7d) | 2026-10-26 → 2026-11-02 (+7d) |  | 15d → 16d |
| 3 | **Asphalt Works** | 2026-10-27 → 2026-11-03 (+7d) | 2026-12-19 → 2026-12-26 (+7d) |  |  |
| SDR-2-CON-RW-ZA-1230 | Asphalt works 1st Layer with MC-01 | 2026-10-27 → 2026-11-03 (+7d) | 2026-11-05 → 2026-11-12 (+7d) |  | 15d → 16d |
| SDR-2-CON-RW-ZA-1240 | Asphalt works 2nd layer with RC-01 | 2026-11-07 → 2026-11-14 (+7d) | 2026-11-26 → 2026-12-03 (+7d) |  | 15d → 16d |
| SDR-2-CON-RW-ZA-2840 | Asphalt Works 3 rd Layer with RC-02 | 2026-11-28 → 2026-12-05 (+7d) | 2026-12-19 → 2026-12-26 (+7d) |  | 15d → 16d |
| 4 | **Kerbstone Installation** | 2026-12-16 → 2026-12-23 (+7d) | 2027-01-30 → 2027-02-06 (+7d) |  |  |
| SDR-2-CON-RW-ZA-3410 | Kerbstone Installation "all Types" Part 1 | 2026-12-16 → 2026-12-23 (+7d) | 2027-01-05 → 2027-01-12 (+7d) |  | 0d → 1d |
| SDR-2-CON-RW-ZA-1250 | Kerbstone Installation "all Types" Part 2 | 2027-01-06 → 2027-01-13 (+7d) | 2027-01-30 → 2027-02-06 (+7d) |  | 0d → 1d |
| 5 | **Interlock Installation** | 2027-01-31 → 2027-02-07 (+7d) | 2027-02-24 → 2027-03-03 (+7d) |  |  |
| SDR-2-CON-RW-ZA-1260 | Interlock Installation | 2027-01-31 → 2027-02-07 (+7d) | 2027-02-24 → 2027-03-03 (+7d) |  | 0d → 1d |
| 6 | **Road Marking** | 2027-02-25 → 2027-03-04 (+7d) | 2027-03-22 → 2027-03-29 (+7d) |  |  |
| SDR-2-CON-RW-ZA-1270 | Retroreflective Thermoplastic White Traffic lines | 2027-02-25 → 2027-03-04 (+7d) | 2027-03-14 → 2027-03-21 (+7d) |  | 0d → 1d |
| SDR-2-CON-RW-ZA-1280 | Retroreflective Thermoplastic Yellow, Traffic lines | 2027-03-15 → 2027-03-22 (+7d) | 2027-03-22 → 2027-03-29 (+7d) |  | 0d → 1d |
| 7 | **Traffic Signage** | 2027-03-23 → 2027-03-30 (+7d) | 2027-04-12 → 2027-04-19 (+7d) |  |  |
| SDR-2-CON-RW-ZA-1290 | Single post-Traffic signs Installation | 2027-03-23 → 2027-03-30 (+7d) | 2027-04-12 → 2027-04-19 (+7d) |  | 0d → 1d |
| 13 | **ROAD WORKS IN ( PH2-A-MCI0 )** |  | 2027-04-08 → 2027-04-15 (+7d) |  |  |
| 11 | **Subgrade** | 2026-09-28 → 2026-10-05 (+7d) | 2026-10-20 → 2026-10-27 (+7d) |  |  |
| SDR-2-CON-RW-ZA-1320 | Subgrade layer works | 2026-09-28 → 2026-10-05 A (+7d) | 2026-10-20 → 2026-10-27 (+7d) | 0% → 10% | 3d → 4d |
| 2 | **Base Course** | 2026-10-21 → 2026-10-28 (+7d) | 2026-11-12 → 2026-11-19 (+7d) |  |  |
| SDR-2-CON-RW-ZA-1350 | Aggregate base course layer | 2026-10-21 → 2026-10-28 (+7d) | 2026-11-12 → 2026-11-19 (+7d) |  | 3d → 4d |
| 8 | **Demolition Work** | 2026-11-14 → 2026-11-21 (+7d) | 2026-11-18 → 2026-11-25 (+7d) |  |  |
| SDR-2-CON-RW-ZA-1360 | Milling of wearing course | 2026-11-14 → 2026-11-21 (+7d) | 2026-11-18 → 2026-11-25 (+7d) |  | 3d → 4d |
| 3 | **Asphalt Works** | 2026-11-19 → 2026-11-26 (+7d) | 2026-12-19 → 2026-12-26 (+7d) |  |  |
| SDR-2-CON-RW-ZA-1370 | Asphalt works 1st Layer with MC-01 | 2026-11-19 → 2026-11-26 (+7d) | 2026-11-24 → 2026-12-01 (+7d) |  | 3d → 4d |
| SDR-2-CON-RW-ZA-1380 | Asphalt works 2nd layer with RC-02 | 2026-11-25 → 2026-12-02 (+7d) | 2026-12-19 → 2026-12-26 (+7d) |  | 3d → 4d |
| 4 | **Kerbstone Installation** | 2026-10-07 → 2026-10-14 (+7d) | 2027-01-12 → 2027-01-19 (+7d) |  |  |
| SDR-2-CON-RW-ZA-3420 | Kerbstone Installation "all Types" Part 1 | 2026-10-07 → 2026-10-14 (+7d) | 2026-10-27 → 2026-11-03 (+7d) |  | 5d → 6d |
| SDR-2-CON-RW-ZA-1390 | Kerbstone Installation "all Types" Part 2 | 2026-12-20 → 2026-12-27 (+7d) | 2027-01-12 → 2027-01-19 (+7d) |  | 3d → 4d |
| 5 | **Interlock Installation** | 2027-01-13 → 2027-01-20 (+7d) | 2027-02-06 → 2027-02-13 (+7d) |  |  |
| SDR-2-CON-RW-ZA-1400 | Interlock Installation | 2027-01-13 → 2027-01-20 (+7d) | 2027-02-06 → 2027-02-13 (+7d) |  | 3d → 4d |
| 6 | **Road Marking** | 2027-02-07 → 2027-02-14 (+7d) | 2027-03-16 → 2027-03-23 (+7d) |  |  |
| SDR-2-CON-RW-ZA-1410 | Retroreflective Thermoplastic White Traffic lines | 2027-02-07 → 2027-02-14 (+7d) | 2027-02-23 → 2027-03-02 (+7d) |  | 3d → 4d |
| SDR-2-CON-RW-ZA-1420 | Retroreflective Thermoplastic Yellow, Traffic lines | 2027-02-24 → 2027-03-03 (+7d) | 2027-03-16 → 2027-03-23 (+7d) |  | 3d → 4d |
| 7 | **Traffic Signage** | 2027-03-17 → 2027-03-24 (+7d) | 2027-04-08 → 2027-04-15 (+7d) |  |  |
| SDR-2-CON-RW-ZA-1430 | Single post-Traffic signs Installation | 2027-03-17 → 2027-03-24 (+7d) | 2027-04-08 → 2027-04-15 (+7d) |  | 3d → 4d |
| 2 | **ROAD WORKS IN ( PH2-A-MCA0 )** |  | 2027-04-06 → 2027-04-13 (+7d) |  |  |
| 11 | **Subgrade** |  | 2026-10-01 → 2026-10-08 (+7d) |  |  |
| SDR-2-CON-RW-ZA-1460 | Subgrade layer works |  | 2026-10-01 → 2026-10-08 (+7d) | 25% → 30% | 12d → 13d |
| 9 | **Earth Works Plot** |  | 2026-10-26 → 2026-11-02 (+7d) |  |  |
| SDR-2-CON-RW-ZA-1480 | Embankments to the Plot 2 Layer |  | 2026-09-28 → 2026-10-05 (+7d) |  | 82d → 76d |
| SDR-2-CON-RW-ZA-1470 | Plot Excavation for cuttings (all types of soil) | 2026-10-03 → 2026-09-30 A (-3d) | 2026-10-26 → 2026-11-02 (+7d) | 0% → 40% | 43d → 37d |
| 2 | **Base Course** | 2026-10-03 → 2026-10-10 (+7d) | 2026-10-19 → 2026-10-26 (+7d) |  |  |
| SDR-2-CON-RW-ZA-1490 | Aggregate base course layer | 2026-10-03 → 2026-10-10 (+7d) | 2026-10-19 → 2026-10-26 (+7d) |  | 12d → 13d |
| 8 | **Demolition Work** | 2026-10-28 → 2026-11-04 (+7d) | 2026-11-01 → 2026-11-08 (+7d) |  |  |
| SDR-2-CON-RW-ZA-1500 | Milling of wearing course | 2026-10-28 → 2026-11-04 (+7d) | 2026-11-01 → 2026-11-08 (+7d) |  | 5d → 6d |
| 3 | **Asphalt Works** | 2026-11-02 → 2026-11-09 (+7d) | 2026-12-15 → 2026-12-22 (+7d) |  |  |
| SDR-2-CON-RW-ZA-1510 | Asphalt works 1st Layer with MC-01 | 2026-11-02 → 2026-11-09 (+7d) | 2026-11-22 → 2026-11-29 (+7d) |  | 5d → 6d |
| SDR-2-CON-RW-ZA-1520 | Asphalt works 2nd layer with RC-02 | 2026-11-23 → 2026-11-30 (+7d) | 2026-12-15 → 2026-12-22 (+7d) |  | 5d → 6d |
| 4 | **Kerbstone Installation** | 2026-10-03 → 2026-10-10 (+7d) | 2027-01-09 → 2027-01-16 (+7d) |  |  |
| SDR-2-CON-RW-ZA-3440 | Kerbstone Installation "all Types" Part 1 | 2026-10-03 → 2026-10-10 (+7d) | 2026-10-26 → 2026-11-02 (+7d) |  | 48d → 49d |
| SDR-2-CON-RW-ZA-1530 | Kerbstone Installation "all Types" Part 2 | 2026-12-16 → 2026-12-23 (+7d) | 2027-01-09 → 2027-01-16 (+7d) |  | 5d → 6d |
| 5 | **Interlock Installation** | 2027-01-10 → 2027-01-17 (+7d) | 2027-02-02 → 2027-02-09 (+7d) |  |  |
| SDR-2-CON-RW-ZA-1540 | Interlock Installation | 2027-01-10 → 2027-01-17 (+7d) | 2027-02-02 → 2027-02-09 (+7d) |  | 5d → 6d |
| 6 | **Road Marking** | 2027-02-03 → 2027-02-10 (+7d) | 2027-03-14 → 2027-03-21 (+7d) |  |  |
| SDR-2-CON-RW-ZA-1550 | Retroreflective Thermoplastic White Traffic lines | 2027-02-03 → 2027-02-10 (+7d) | 2027-02-18 → 2027-02-27 (+9d) |  | 5d → 6d |

| ID | Task | Start | Finish | Complete | Total float |
| --- | --- | --- | --- | --- | --- |
| SDR-2-CON-RW-ZA-1560 | Retroreflective Thermoplastic Yellow, Traffic lines | 2027-02-20 → 2027-02-28 (+8d) | 2027-03-14 → 2027-03-21 (+7d) |  | 5d → 6d |
| 7 | **Traffic Signage** | 2027-03-15 → 2027-03-22 (+7d) | 2027-04-06 → 2027-04-13 (+7d) |  |  |
| SDR-2-CON-RW-ZA-1570 | Single post-Traffic signs Installation | 2027-03-15 → 2027-03-22 (+7d) | 2027-04-06 → 2027-04-13 (+7d) |  | 5d → 6d |
| 3 | **ROAD WORKS IN ( PH2-A-MCB0 )** |  | 2027-03-23 → 2027-03-30 (+7d) |  |  |
| 11 | **Subgrade** |  | 2026-09-28 → 2026-10-05 (+7d) |  |  |
| SDR-2-CON-RW-ZA-1600 | Subgrade layer works |  | 2026-09-28 → 2026-10-05 (+7d) | 25% → 30% | 26d → 20d |
| 9 | **Earth Works Plot** |  | 2026-09-28 → 2026-10-05 (+7d) |  |  |
| SDR-2-CON-RW-ZA-1610 | Plot Excavation for cuttings (all types of soil) |  | 2026-09-28 → 2026-10-05 (+7d) |  | 49d → 43d |
| SDR-2-CON-RW-ZA-1620 | Embankments to the Plot 2 Layer |  | 2026-09-28 → 2026-10-05 (+7d) | 0% → 20% | 152d → 146d |
| 8 | **Demolition Work** | 2026-10-22 → 2026-10-29 (+7d) | 2026-10-25 → 2026-11-01 (+7d) |  |  |
| SDR-2-CON-RW-ZA-1640 | Milling of wearing course | 2026-10-22 → 2026-10-29 (+7d) | 2026-10-25 → 2026-11-01 (+7d) |  | 26d → 20d |
| 2 | **Base Course** | 2026-09-29 → 2026-10-06 (+7d) | 2026-10-21 → 2026-10-28 (+7d) |  |  |
| SDR-2-CON-RW-ZA-1630 | Aggregate base course layer | 2026-09-29 → 2026-10-06 (+7d) | 2026-10-21 → 2026-10-28 (+7d) |  | 26d → 20d |
| 3 | **Asphalt Works** | 2026-10-26 → 2026-11-02 (+7d) | 2026-12-02 → 2026-12-09 (+7d) |  |  |
| SDR-2-CON-RW-ZA-1650 | Asphalt works 1st Layer with MC-01 | 2026-10-26 → 2026-11-02 (+7d) | 2026-11-18 → 2026-11-25 (+7d) |  | 26d → 20d |
| SDR-2-CON-RW-ZA-1660 | Asphalt works 2nd layer with RC-02 | 2026-11-19 → 2026-11-26 (+7d) | 2026-12-02 → 2026-12-09 (+7d) |  | 26d → 20d |
| 4 | **Kerbstone Installation** | 2026-09-29 → 2026-10-06 (+7d) | 2026-12-26 → 2027-01-02 (+7d) |  |  |
| SDR-2-CON-RW-ZA-3430 | Kerbstone Installation "all Types" Part 1 | 2026-09-29 → 2026-10-06 (+7d) | 2026-10-21 → 2026-10-28 (+7d) |  | 44d → 45d |
| SDR-2-CON-RW-ZA-1670 | Kerbstone Installation "all Types" Part 2 | 2026-12-03 → 2026-12-10 (+7d) | 2026-12-26 → 2027-01-02 (+7d) |  | 26d → 20d |
| 5 | **Interlock Installation** | 2026-12-27 → 2027-01-03 (+7d) | 2027-01-19 → 2027-01-26 (+7d) |  |  |
| SDR-2-CON-RW-ZA-1680 | Interlock Installation | 2026-12-27 → 2027-01-03 (+7d) | 2027-01-19 → 2027-01-26 (+7d) |  | 26d → 20d |
| 6 | **Road Marking** | 2027-01-20 → 2027-01-27 (+7d) | 2027-02-23 → 2027-03-02 (+7d) |  |  |
| SDR-2-CON-RW-ZA-1690 | Retroreflective Thermoplastic White Traffic lines | 2027-01-20 → 2027-01-27 (+7d) | 2027-02-06 → 2027-02-13 (+7d) |  | 26d → 20d |
| SDR-2-CON-RW-ZA-1700 | Retroreflective Thermoplastic Yellow, Traffic lines | 2027-02-07 → 2027-02-14 (+7d) | 2027-02-23 → 2027-03-02 (+7d) |  | 26d → 20d |
| 7 | **Traffic Signage** | 2027-02-24 → 2027-03-03 (+7d) | 2027-03-23 → 2027-03-30 (+7d) |  |  |
| SDR-2-CON-RW-ZA-1710 | Single post-Traffic signs Installation | 2027-02-24 → 2027-03-03 (+7d) | 2027-03-23 → 2027-03-30 (+7d) |  | 26d → 20d |
| 7 | **ROAD WORKS IN ( PH2-A-MCC0 )** |  | 2027-03-31 → 2027-04-07 (+7d) |  |  |
| SDR-2-CON-RW-ZA-1750 | Plot Excavation for cuttings (all types of soil) |  | 2026-10-20 → 2026-10-27 (+7d) | 60% → 80% | 33.1d → 34.1d |
| SDR-2-CON-RW-ZA-1760 | Embankments to the Plot 2 Layer |  | 2026-10-21 → 2026-10-28 (+7d) |  | 105.4d → 104.1d |
| 2 | **Base Course** |  | 2026-09-30 → 2026-10-07 (+7d) |  |  |
| SDR-2-CON-RW-ZA-1770 | Aggregate base course layer |  | 2026-09-30 → 2026-10-07 (+7d) | 65% → 90% | 42d → 43d |
| 8 | **Demolition Work** | 2026-10-01 → 2026-10-08 (+7d) | 2026-10-04 → 2026-10-11 (+7d) |  |  |
| SDR-2-CON-RW-ZA-1780 | Milling of wearing course | 2026-10-01 → 2026-10-08 (+7d) | 2026-10-04 → 2026-10-11 (+7d) |  | 42d → 43d |
| 3 | **Asphalt Works** | 2026-11-11 → 2026-11-18 (+7d) | 2026-12-12 → 2026-12-19 (+7d) |  |  |
| SDR-2-CON-RW-ZA-1790 | Asphalt works 1st Layer with MC-01 | 2026-11-11 → 2026-11-18 (+7d) | 2026-11-29 → 2026-12-06 (+7d) |  | 10d → 11d |
| SDR-2-CON-RW-ZA-1800 | Asphalt works 2nd layer with RC-02 | 2026-11-30 → 2026-12-07 (+7d) | 2026-12-12 → 2026-12-19 (+7d) |  | 10d → 11d |
| 4 | **Kerbstone Installation** | 2026-09-28 → 2026-10-05 (+7d) | 2027-01-04 → 2027-01-11 (+7d) |  |  |
| SDR-2-CON-RW-ZA-3450 | Kerbstone Installation "all Types" Part 1 | 2026-09-28 → 2026-10-05 (+7d) | 2026-10-18 → 2026-10-25 (+7d) |  | 58d → 59d |
| SDR-2-CON-RW-ZA-1810 | Kerbstone Installation "all Types" Part 2 | 2026-12-13 → 2026-12-20 (+7d) | 2027-01-04 → 2027-01-11 (+7d) |  | 10d → 11d |
| 5 | **Interlock Installation** | 2027-01-05 → 2027-01-12 (+7d) | 2027-01-28 → 2027-02-04 (+7d) |  |  |
| SDR-2-CON-RW-ZA-1820 | Interlock Installation | 2027-01-05 → 2027-01-12 (+7d) | 2027-01-28 → 2027-02-04 (+7d) |  | 10d → 11d |
| 6 | **Road Marking** | 2027-01-30 → 2027-02-06 (+7d) | 2027-03-03 → 2027-03-15 (+12d) |  |  |
| SDR-2-CON-RW-ZA-1830 | Retroreflective Thermoplastic White Traffic lines | 2027-01-30 → 2027-02-06 (+7d) | 2027-02-14 → 2027-02-21 (+7d) |  | 10d → 11d |
| SDR-2-CON-RW-ZA-1840 | Retroreflective Thermoplastic Yellow, Traffic lines | 2027-02-15 → 2027-02-23 (+8d) | 2027-03-03 → 2027-03-15 (+12d) |  | 10d → 11d |
| 7 | **Traffic Signage** | 2027-03-04 → 2027-03-16 (+12d) | 2027-03-31 → 2027-04-07 (+7d) |  |  |
| SDR-2-CON-RW-ZA-1850 | Single post-Traffic signs Installation | 2027-03-04 → 2027-03-16 (+12d) | 2027-03-31 → 2027-04-07 (+7d) |  | 10d → 11d |
| 4 | **ROAD WORKS IN ( PH2-A-MCD0 )** |  | 2027-04-03 → 2027-04-10 (+7d) |  |  |
| 9 | **Earth Works Plot** |  | 2026-09-28 → 2026-10-05 (+7d) |  |  |
| SDR-2-CON-RW-ZA-1890 | Plot Excavation for cuttings (all types of soil) |  | 2026-09-28 → 2026-10-05 (+7d) | 30% → 50% | 47d → 48d |
| SDR-2-CON-RW-ZA-1900 | Embankments to the Plot 2 Layer |  | 2026-09-28 → 2026-10-05 (+7d) | 30% → 50% | 116d → 111d |
| 2 | **Base Course** |  | 2026-09-28 → 2026-10-05 (+7d) |  |  |
| SDR-2-CON-RW-ZA-1910 | Aggregate base course layer |  | 2026-09-28 → 2026-10-05 (+7d) | 60% → 90% | 51d → 52d |
| 8 | **Demolition Work** | 2026-10-19 → 2026-10-26 (+7d) | 2026-10-26 → 2026-11-02 (+7d) |  |  |
| SDR-2-CON-RW-ZA-1920 | Milling of wearing course | 2026-10-19 → 2026-10-26 (+7d) | 2026-10-26 → 2026-11-02 (+7d) |  | 33.1d → 34.1d |
| 3 | **Asphalt Works** | 2026-11-25 → 2026-12-02 (+7d) | 2026-12-13 → 2026-12-20 (+7d) |  |  |
| SDR-2-CON-RW-ZA-1930 | Asphalt works 1st Layer with MC-01 | 2026-11-25 → 2026-12-02 (+7d) | 2026-12-05 → 2026-12-12 (+7d) |  | 8d → 9d |
| SDR-2-CON-RW-ZA-1940 | Asphalt works 2nd layer with RC-02 | 2026-12-06 → 2026-12-13 (+7d) | 2026-12-13 → 2026-12-20 (+7d) |  | 8d → 9d |
| 4 | **Kerbstone Installation** | 2026-09-28 → 2026-10-05 (+7d) | 2027-01-06 → 2027-01-13 (+7d) |  |  |
| SDR-2-CON-RW-ZA-3460 | Kerbstone Installation "all Types" Part 1 | 2026-09-28 → 2026-10-05 (+7d) | 2026-10-18 → 2026-10-25 (+7d) |  | 56d → 57d |
| SDR-2-CON-RW-ZA-1950 | Kerbstone Installation "all Types" Part 2 | 2026-12-14 → 2026-12-21 (+7d) | 2027-01-06 → 2027-01-13 (+7d) |  | 8d → 9d |
| 5 | **Interlock Installation** | 2027-01-07 → 2027-01-14 (+7d) | 2027-01-31 → 2027-02-07 (+7d) |  |  |
| SDR-2-CON-RW-ZA-1960 | Interlock Installation | 2027-01-07 → 2027-01-14 (+7d) | 2027-01-31 → 2027-02-07 (+7d) |  | 8d → 9d |
| 6 | **Road Marking** | 2027-02-01 → 2027-02-08 (+7d) | 2027-03-06 → 2027-03-17 (+11d) |  |  |
| SDR-2-CON-RW-ZA-1970 | Retroreflective Thermoplastic White Traffic lines | 2027-02-01 → 2027-02-08 (+7d) | 2027-02-16 → 2027-02-24 (+8d) |  | 8d → 9d |
| SDR-2-CON-RW-ZA-1980 | Retroreflective Thermoplastic Yellow, Traffic lines | 2027-02-17 → 2027-02-25 (+8d) | 2027-03-06 → 2027-03-17 (+11d) |  | 8d → 9d |
| 7 | **Traffic Signage** | 2027-03-07 → 2027-03-18 (+11d) | 2027-04-03 → 2027-04-10 (+7d) |  |  |
| SDR-2-CON-RW-ZA-1990 | Single post-Traffic signs Installation | 2027-03-07 → 2027-03-18 (+11d) | 2027-04-03 → 2027-04-10 (+7d) |  | 8d → 9d |
| 5 | **ROAD WORKS IN ( PH2-A-MCE0 )** |  | 2027-03-18 → 2027-03-25 (+7d) |  |  |
| 11 | **Subgrade** | 2026-09-28 → 2026-10-05 (+7d) | 2026-10-20 → 2026-10-27 (+7d) |  |  |
| SDR-2-CON-RW-ZA-2020 | Subgrade layer works | 2026-09-28 → 2026-10-05 A (+7d) | 2026-10-20 → 2026-10-27 (+7d) | 0% → 10% | 10d → 11d |

| ID | Task | Start | Finish | Complete | Total float |
| --- | --- | --- | --- | --- | --- |
| 9 | **Earth Works Plot** |  | 2026-10-21 → 2026-10-28 (+7d) |  |  |
| SDR-2-CON-RW-ZA-3190 | Embankments to the Plot 1 Layer |  | 2026-10-20 → 2026-10-27 (+7d) | 30% → 50% | 77d → 72d |
| SDR-2-CON-RW-ZA-2030 | Plot Excavation for cuttings (all types of soil) |  | 2026-10-20 → 2026-10-27 (+7d) |  | 35d → 36d |
| SDR-2-CON-RW-ZA-2040 | Embankments to the Plot 2 Layer |  | 2026-10-21 → 2026-10-28 (+7d) |  | 76.1d → 71.1d |
| 2 | **Base Course** | 2026-10-21 → 2026-10-28 (+7d) | 2026-10-29 → 2026-11-05 (+7d) |  |  |
| SDR-2-CON-RW-ZA-2050 | Aggregate base course layer | 2026-10-21 → 2026-10-28 (+7d) | 2026-10-29 → 2026-11-05 (+7d) |  | 21d → 22d |
| 8 | **Demolition Work** | 2026-10-31 → 2026-11-07 (+7d) | 2026-11-01 → 2026-11-08 (+7d) |  |  |
| SDR-2-CON-RW-ZA-2060 | Milling of wearing course | 2026-10-31 → 2026-11-07 (+7d) | 2026-11-01 → 2026-11-08 (+7d) |  | 21d → 22d |
| 3 | **Asphalt Works** | 2026-11-02 → 2026-11-09 (+7d) | 2026-11-28 → 2026-12-05 (+7d) |  |  |
| SDR-2-CON-RW-ZA-2070 | Asphalt works 1st Layer with MC-01 | 2026-11-02 → 2026-11-09 (+7d) | 2026-11-12 → 2026-11-19 (+7d) |  | 21d → 22d |
| SDR-2-CON-RW-ZA-2080 | Asphalt works 2nd layer with RC-02 | 2026-11-14 → 2026-11-21 (+7d) | 2026-11-28 → 2026-12-05 (+7d) |  | 21d → 22d |
| 4 | **Kerbstone Installation** | 2026-10-21 → 2026-10-28 (+7d) | 2026-12-22 → 2026-12-29 (+7d) |  |  |
| SDR-2-CON-RW-ZA-3470 | Kerbstone Installation "all Types" Part 1 | 2026-10-21 → 2026-10-28 (+7d) | 2026-11-10 → 2026-11-17 (+7d) |  | 10d → 11d |
| SDR-2-CON-RW-ZA-2090 | Kerbstone Installation "all Types" Part 2 | 2026-11-29 → 2026-12-06 (+7d) | 2026-12-22 → 2026-12-29 (+7d) |  | 21d → 22d |
| 5 | **Interlock Installation** | 2026-12-23 → 2026-12-30 (+7d) | 2027-01-16 → 2027-01-23 (+7d) |  |  |
| SDR-2-CON-RW-ZA-2100 | Interlock Installation | 2026-12-23 → 2026-12-30 (+7d) | 2027-01-16 → 2027-01-23 (+7d) |  | 21d → 22d |
| 6 | **Road Marking** | 2027-01-17 → 2027-01-24 (+7d) | 2027-02-17 → 2027-02-25 (+8d) |  |  |
| SDR-2-CON-RW-ZA-2110 | Retroreflective Thermoplastic White Traffic lines | 2027-01-17 → 2027-01-24 (+7d) | 2027-02-01 → 2027-02-08 (+7d) |  | 21d → 22d |
| SDR-2-CON-RW-ZA-2120 | Retroreflective Thermoplastic Yellow, Traffic lines | 2027-02-02 → 2027-02-09 (+7d) | 2027-02-17 → 2027-02-25 (+8d) |  | 21d → 22d |
| 7 | **Traffic Signage** | 2027-02-18 → 2027-02-27 (+9d) | 2027-03-18 → 2027-03-25 (+7d) |  |  |
| SDR-2-CON-RW-ZA-2130 | Single post-Traffic signs Installation | 2027-02-18 → 2027-02-27 (+9d) | 2027-03-18 → 2027-03-25 (+7d) |  | 21d → 22d |
| 6 | **ROAD WORKS IN ( PH2-A-MCF0 )** |  | 2027-03-20 → 2027-03-27 (+7d) |  |  |
| 11 | **Subgrade** | 2026-09-28 → 2026-10-05 (+7d) | 2026-10-20 → 2026-10-27 (+7d) |  |  |
| SDR-2-CON-RW-ZA-2160 | Subgrade layer works | 2026-09-28 → 2026-10-05 A (+7d) | 2026-10-20 → 2026-10-27 (+7d) | 0% → 10% | 20d → 21d |
| 2 | **Base Course** | 2026-10-21 → 2026-10-28 (+7d) | 2026-11-03 → 2026-11-10 (+7d) |  |  |
| SDR-2-CON-RW-ZA-2190 | Aggregate base course layer | 2026-10-21 → 2026-10-28 (+7d) | 2026-11-03 → 2026-11-10 (+7d) |  | 20d → 21d |
| 8 | **Demolition Work** | 2026-11-04 → 2026-11-11 (+7d) | 2026-11-05 → 2026-11-12 (+7d) |  |  |
| SDR-2-CON-RW-ZA-2200 | Milling of wearing course | 2026-11-04 → 2026-11-11 (+7d) | 2026-11-05 → 2026-11-12 (+7d) |  | 20d → 21d |
| 3 | **Asphalt Works** | 2026-11-07 → 2026-11-14 (+7d) | 2026-11-29 → 2026-12-06 (+7d) |  |  |
| SDR-2-CON-RW-ZA-2210 | Asphalt works 1st Layer with MC-01 | 2026-11-07 → 2026-11-14 (+7d) | 2026-11-15 → 2026-11-22 (+7d) |  | 20d → 21d |
| SDR-2-CON-RW-ZA-2220 | Asphalt works 2nd layer with RC-02 | 2026-11-16 → 2026-11-23 (+7d) | 2026-11-29 → 2026-12-06 (+7d) |  | 20d → 21d |
| 4 | **Kerbstone Installation** | 2026-10-21 → 2026-10-28 (+7d) | 2026-12-23 → 2026-12-30 (+7d) |  |  |
| SDR-2-CON-RW-ZA-3480 | Kerbstone Installation "all Types" Part 1 | 2026-10-21 → 2026-10-28 (+7d) | 2026-11-10 → 2026-11-17 (+7d) |  | 20d → 21d |
| SDR-2-CON-RW-ZA-2230 | Kerbstone Installation "all Types" Part 2 | 2026-11-30 → 2026-12-07 (+7d) | 2026-12-23 → 2026-12-30 (+7d) |  | 20d → 21d |
| 5 | **Interlock Installation** | 2026-12-24 → 2026-12-31 (+7d) | 2027-01-17 → 2027-01-24 (+7d) |  |  |
| SDR-2-CON-RW-ZA-2240 | Interlock Installation | 2026-12-24 → 2026-12-31 (+7d) | 2027-01-17 → 2027-01-24 (+7d) |  | 20d → 21d |
| 6 | **Road Marking** | 2027-01-18 → 2027-01-25 (+7d) | 2027-02-18 → 2027-02-27 (+9d) |  |  |
| SDR-2-CON-RW-ZA-2250 | Retroreflective Thermoplastic White Traffic lines | 2027-01-18 → 2027-01-25 (+7d) | 2027-02-02 → 2027-02-09 (+7d) |  | 20d → 21d |
| SDR-2-CON-RW-ZA-2260 | Retroreflective Thermoplastic Yellow, Traffic lines | 2027-02-03 → 2027-02-10 (+7d) | 2027-02-18 → 2027-02-27 (+9d) |  | 20d → 21d |
| 7 | **Traffic Signage** | 2027-02-20 → 2027-02-28 (+8d) | 2027-03-20 → 2027-03-27 (+7d) |  |  |
| SDR-2-CON-RW-ZA-2270 | Single post-Traffic signs Installation | 2027-02-20 → 2027-02-28 (+8d) | 2027-03-20 → 2027-03-27 (+7d) |  | 20d → 21d |
| 9 | **ROAD WORKS IN ( PH2-A-MCG0 )** |  | 2027-02-28 → 2027-03-07 (+7d) |  |  |
| 11 | **Subgrade** | 2026-09-28 → 2026-10-05 (+7d) | 2026-10-18 → 2026-10-25 (+7d) |  |  |
| SDR-2-CON-RW-ZA-2300 | Subgrade layer works | 2026-09-28 → 2026-10-05 A (+7d) | 2026-10-18 → 2026-10-25 (+7d) | 0% → 10% | 32d → 27d |
| 9 | **Earth Works Plot** |  | 2026-10-20 → 2026-10-27 (+7d) |  |  |
| SDR-2-CON-RW-ZA-2310 | Plot Excavation for cuttings (all types of soil) |  | 2026-10-18 → 2026-10-25 (+7d) | 55% → 70% | 65d → 60d |
| SDR-2-CON-RW-ZA-2320 | Embankments to the Plot 2 Layer |  | 2026-10-20 → 2026-10-27 (+7d) | 65% → 70% | 132d → 126d |
| 2 | **Base Course** | 2026-10-19 → 2026-10-26 (+7d) | 2026-10-26 → 2026-11-02 (+7d) |  |  |
| SDR-2-CON-RW-ZA-2330 | Aggregate base course layer | 2026-10-19 → 2026-10-26 (+7d) | 2026-10-26 → 2026-11-02 (+7d) |  | 38d → 33d |
| 8 | **Demolition Work** | 2026-10-27 → 2026-11-03 (+7d) | 2026-10-28 → 2026-11-04 (+7d) |  |  |
| SDR-2-CON-RW-ZA-2340 | Milling of wearing course | 2026-10-27 → 2026-11-03 (+7d) | 2026-10-28 → 2026-11-04 (+7d) |  | 38d → 33d |
| 3 | **Asphalt Works** | 2026-10-29 → 2026-11-05 (+7d) | 2026-11-14 → 2026-11-21 (+7d) |  |  |
| SDR-2-CON-RW-ZA-2350 | Asphalt works 1st Layer with MC-01 | 2026-10-29 → 2026-11-05 (+7d) | 2026-11-01 → 2026-11-08 (+7d) |  | 38d → 33d |
| SDR-2-CON-RW-ZA-2360 | Asphalt works 2nd layer with RC-02 | 2026-11-02 → 2026-11-09 (+7d) | 2026-11-14 → 2026-11-21 (+7d) |  | 53d → 48d |
| 4 | **Kerbstone Installation** | 2026-10-19 → 2026-10-26 (+7d) | 2026-12-08 → 2026-12-15 (+7d) |  |  |
| SDR-2-CON-RW-ZA-3490 | Kerbstone Installation "all Types" Part 1 | 2026-10-19 → 2026-10-26 (+7d) | 2026-11-08 → 2026-11-15 (+7d) |  | 32d → 27d |
| SDR-2-CON-RW-ZA-2370 | Kerbstone Installation "all Types" Part 2 | 2026-11-15 → 2026-11-22 (+7d) | 2026-12-08 → 2026-12-15 (+7d) |  | 53d → 48d |
| 5 | **Interlock Installation** | 2026-12-09 → 2026-12-16 (+7d) | 2027-01-02 → 2027-01-09 (+7d) |  |  |
| SDR-2-CON-RW-ZA-2380 | Interlock Installation | 2026-12-09 → 2026-12-16 (+7d) | 2027-01-02 → 2027-01-09 (+7d) |  | 54d → 49d |
| 6 | **Road Marking** | 2027-01-03 → 2027-01-10 (+7d) | 2027-02-03 → 2027-02-10 (+7d) |  |  |
| SDR-2-CON-RW-ZA-2390 | Retroreflective Thermoplastic White Traffic lines | 2027-01-03 → 2027-01-10 (+7d) | 2027-01-18 → 2027-01-25 (+7d) |  | 54d → 49d |
| SDR-2-CON-RW-ZA-2400 | Retroreflective Thermoplastic Yellow, Traffic lines | 2027-01-19 → 2027-01-26 (+7d) | 2027-02-03 → 2027-02-10 (+7d) |  | 54d → 49d |
| 7 | **Traffic Signage** | 2027-02-04 → 2027-02-11 (+7d) | 2027-02-28 → 2027-03-07 (+7d) |  |  |
| SDR-2-CON-RW-ZA-2410 | Single post-Traffic signs Installation | 2027-02-04 → 2027-02-11 (+7d) | 2027-02-28 → 2027-03-07 (+7d) |  | 54d → 49d |
| 10 | **ROAD WORKS IN ( PH2-A-MCH0 )** |  | 2027-03-14 → 2027-03-21 (+7d) |  |  |
| 11 | **Subgrade** | 2026-09-28 → 2026-10-05 (+7d) | 2026-10-06 → 2026-10-13 (+7d) |  |  |
| SDR-2-CON-RW-ZA-2440 | Subgrade layer works | 2026-09-28 → 2026-10-05 A (+7d) | 2026-10-06 → 2026-10-13 (+7d) | 0% → 10% | 19d → 14d |
| 9 | **Earth Works Plot** |  | 2026-10-22 → 2026-10-29 (+7d) |  |  |
| SDR-2-CON-RW-ZA-3310 | Embankments to the Plot 1 Layer |  | 2026-09-28 → 2026-10-05 (+7d) | 80% → 85% | 62d → 57d |
| SDR-2-CON-RW-ZA-2460 | Embankments to the Plot 2 Layer | 2026-09-29 → 2026-10-06 (+7d) | 2026-10-22 → 2026-10-29 (+7d) |  | 62d → 57d |

| ID | Task | Start | Finish | Complete | Total float |
| --- | --- | --- | --- | --- | --- |
| 2 | **Base Course** | 2026-10-07 → 2026-10-14 (+7d) | 2026-10-24 → 2026-10-31 (+7d) |  |  |
| SDR-2-CON-RW-ZA-2470 | Aggregate base course layer | 2026-10-07 → 2026-10-14 (+7d) | 2026-10-24 → 2026-10-31 (+7d) |  | 20d → 15d |
| 8 | **Demolition Work** | 2026-10-25 → 2026-11-01 (+7d) | 2026-10-26 → 2026-11-02 (+7d) |  |  |
| SDR-2-CON-RW-ZA-2480 | Milling of wearing course | 2026-10-25 → 2026-11-01 (+7d) | 2026-10-26 → 2026-11-02 (+7d) |  | 20d → 15d |
| 3 | **Asphalt Works** | 2026-10-28 → 2026-11-04 (+7d) | 2026-11-23 → 2026-11-30 (+7d) |  |  |
| SDR-2-CON-RW-ZA-2490 | Asphalt works 1st Layer with MC-01 | 2026-10-28 → 2026-11-04 (+7d) | 2026-11-10 → 2026-11-17 (+7d) |  | 19d → 14d |
| SDR-2-CON-RW-ZA-2500 | Asphalt works 2nd layer with RC-02 | 2026-11-11 → 2026-11-18 (+7d) | 2026-11-23 → 2026-11-30 (+7d) |  | 19d → 14d |
| 4 | **Kerbstone Installation** | 2026-10-07 → 2026-10-14 (+7d) | 2026-12-17 → 2026-12-24 (+7d) |  |  |
| SDR-2-CON-RW-ZA-3500 | Kerbstone Installation "all Types" Part 1 | 2026-10-07 → 2026-10-14 (+7d) | 2026-10-27 → 2026-11-03 (+7d) |  | 19d → 14d |
| SDR-2-CON-RW-ZA-2510 | Kerbstone Installation "all Types" Part 2 | 2026-11-24 → 2026-12-01 (+7d) | 2026-12-17 → 2026-12-24 (+7d) |  | 19d → 14d |
| 5 | **Interlock Installation** | 2026-12-19 → 2026-12-26 (+7d) | 2027-01-11 → 2027-01-18 (+7d) |  |  |
| SDR-2-CON-RW-ZA-2520 | Interlock Installation | 2026-12-19 → 2026-12-26 (+7d) | 2027-01-11 → 2027-01-18 (+7d) |  | 27d → 22d |
| 6 | **Road Marking** | 2027-01-12 → 2027-01-19 (+7d) | 2027-02-13 → 2027-02-20 (+7d) |  |  |
| SDR-2-CON-RW-ZA-2530 | Retroreflective Thermoplastic White Traffic lines | 2027-01-12 → 2027-01-19 (+7d) | 2027-01-27 → 2027-02-03 (+7d) |  | 27d → 22d |
| SDR-2-CON-RW-ZA-2540 | Retroreflective Thermoplastic Yellow, Traffic lines | 2027-01-28 → 2027-02-04 (+7d) | 2027-02-13 → 2027-02-20 (+7d) |  | 27d → 22d |
| 7 | **Traffic Signage** | 2027-02-14 → 2027-02-21 (+7d) | 2027-03-14 → 2027-03-21 (+7d) |  |  |
| SDR-2-CON-RW-ZA-2550 | Single post-Traffic signs Installation | 2027-02-14 → 2027-02-21 (+7d) | 2027-03-14 → 2027-03-21 (+7d) |  | 27d → 22d |
| 11 | **ROAD WORKS IN ( PH2-ART-MC00 )** |  | 2027-02-09 → 2027-02-15 (+6d) |  |  |
| 2 | **Base Course** |  | 2026-09-28 → 2026-10-05 (+7d) |  |  |
| SDR-2-CON-RW-ZA-2610 | Aggregate base course layer |  | 2026-09-28 → 2026-10-05 A (+7d) | 86% → 100% | 37d → none |
| 8 | **Demolition Work** | 2026-09-29 → 2026-10-05 (+6d) | 2026-09-30 → 2026-10-06 (+6d) |  |  |
| SDR-2-CON-RW-ZA-2620 | Milling of wearing course | 2026-09-29 → 2026-10-05 (+6d) | 2026-09-30 → 2026-10-06 (+6d) |  | 37d → 33d |
| 3 | **Asphalt Works** | 2026-10-01 → 2026-10-07 (+6d) | 2026-10-27 → 2026-11-02 (+6d) |  |  |
| SDR-2-CON-RW-ZA-2630 | Asphalt works 1st Layer with MC-01 | 2026-10-01 → 2026-10-07 (+6d) | 2026-10-14 → 2026-10-20 (+6d) |  | 37d → 33d |
| SDR-2-CON-RW-ZA-2640 | Asphalt works 2nd layer with RC-02 | 2026-10-15 → 2026-10-21 (+6d) | 2026-10-27 → 2026-11-02 (+6d) |  | 37d → 33d |
| 4 | **Kerbstone Installation** | 2026-09-28 → 2026-10-05 (+7d) | 2026-11-21 → 2026-11-26 (+5d) |  |  |
| SDR-2-CON-RW-ZA-3510 | Kerbstone Installation "all Types" Part 1 | 2026-09-28 → 2026-10-05 (+7d) | 2026-10-18 → 2026-10-25 (+7d) |  | 45d → 40d |
| SDR-2-CON-RW-ZA-2650 | Kerbstone Installation "all Types" Part 2 | 2026-10-28 → 2026-11-03 (+6d) | 2026-11-21 → 2026-11-26 (+5d) |  | 37d → 33d |
| 5 | **Interlock Installation** | 2026-11-22 → 2026-11-28 (+6d) | 2026-12-15 → 2026-12-21 (+6d) |  |  |
| SDR-2-CON-RW-ZA-2660 | Interlock Installation | 2026-11-22 → 2026-11-28 (+6d) | 2026-12-15 → 2026-12-21 (+6d) |  | 37d → 33d |
| 6 | **Road Marking** | 2026-12-16 → 2026-12-22 (+6d) | 2027-01-21 → 2027-01-27 (+6d) |  |  |
| SDR-2-CON-RW-ZA-2670 | Retroreflective Thermoplastic White Traffic lines | 2026-12-16 → 2026-12-22 (+6d) | 2027-01-04 → 2027-01-10 (+6d) |  | 37d → 33d |
| SDR-2-CON-RW-ZA-2680 | Retroreflective Thermoplastic Yellow, Traffic lines | 2027-01-05 → 2027-01-11 (+6d) | 2027-01-21 → 2027-01-27 (+6d) |  | 37d → 33d |
| 7 | **Traffic Signage** | 2027-01-23 → 2027-01-28 (+5d) | 2027-02-09 → 2027-02-15 (+6d) |  |  |
| SDR-2-CON-RW-ZA-2690 | Single post-Traffic signs Installation | 2027-01-23 → 2027-01-28 (+5d) | 2027-02-09 → 2027-02-15 (+6d) |  | 37d → 33d |
| 12 | **ROAD WORKS IN ( PH2-ART-MC10 )** |  | 2027-03-15 → 2027-03-22 (+7d) |  |  |
| 11 | **Subgrade** |  | 2026-10-11 → 2026-10-18 (+7d) |  |  |
| SDR-2-CON-RW-ZA-2720 | Subgrade layer works |  | 2026-10-11 → 2026-10-18 (+7d) | 25% → 60% | 46d → 40d |
| 2 | **Base Course** | 2026-10-12 → 2026-10-19 (+7d) | 2026-10-24 → 2026-10-31 (+7d) |  |  |
| SDR-2-CON-RW-ZA-2750 | Aggregate base course layer | 2026-10-12 → 2026-10-19 (+7d) | 2026-10-24 → 2026-10-31 (+7d) |  | 46d → 40d |
| 8 | **Demolition Work** | 2026-10-25 → 2026-11-01 (+7d) | 2026-10-26 → 2026-11-02 (+7d) |  |  |
| SDR-2-CON-RW-ZA-2760 | Milling of wearing course | 2026-10-25 → 2026-11-01 (+7d) | 2026-10-26 → 2026-11-02 (+7d) |  | 46d → 40d |
| 3 | **Asphalt Works** | 2026-10-27 → 2026-11-03 (+7d) | 2026-12-17 → 2026-12-24 (+7d) |  |  |
| SDR-2-CON-RW-ZA-2770 | Asphalt works 1st Layer with MC-01 | 2026-10-27 → 2026-11-03 (+7d) | 2026-11-07 → 2026-11-14 (+7d) |  | 46d → 40d |
| SDR-2-CON-RW-ZA-2780 | Asphalt works 2nd layer with RC-02 | 2026-11-08 → 2026-11-15 (+7d) | 2026-11-23 → 2026-11-30 (+7d) |  | 46d → 40d |
| SDR-2-CON-RW-ZA-2850 | Asphalt Works 3 rd Layer with RC-02 | 2026-11-24 → 2026-12-01 (+7d) | 2026-12-17 → 2026-12-24 (+7d) |  | 46d → 40d |
| 4 | **Kerbstone Installation** | 2026-10-12 → 2026-10-19 (+7d) | 2027-01-11 → 2027-01-18 (+7d) |  |  |
| SDR-2-CON-RW-ZA-3520 | Kerbstone Installation "all Types" Part 1 | 2026-10-12 → 2026-10-19 (+7d) | 2026-11-01 → 2026-11-08 (+7d) |  | 69d → 64d |
| SDR-2-CON-RW-ZA-2790 | Kerbstone Installation "all Types" Part 2 | 2026-12-19 → 2026-12-26 (+7d) | 2027-01-11 → 2027-01-18 (+7d) |  | 46d → 40d |
| 5 | **Interlock Installation** | 2027-01-12 → 2027-01-19 (+7d) | 2027-02-04 → 2027-02-11 (+7d) |  |  |
| SDR-2-CON-RW-ZA-2800 | Interlock Installation | 2027-01-12 → 2027-01-19 (+7d) | 2027-02-04 → 2027-02-11 (+7d) |  | 46d → 40d |
| 6 | **Road Marking** | 2027-02-06 → 2027-02-13 (+7d) | 2027-02-24 → 2027-03-03 (+7d) |  |  |
| SDR-2-CON-RW-ZA-2810 | Retroreflective Thermoplastic White Traffic lines | 2027-02-06 → 2027-02-13 (+7d) | 2027-02-14 → 2027-02-21 (+7d) |  | 46d → 40d |
| SDR-2-CON-RW-ZA-2820 | Retroreflective Thermoplastic Yellow, Traffic lines | 2027-02-15 → 2027-02-23 (+8d) | 2027-02-24 → 2027-03-03 (+7d) |  | 46d → 40d |
| 7 | **Traffic Signage** | 2027-02-25 → 2027-03-04 (+7d) | 2027-03-15 → 2027-03-22 (+7d) |  |  |
| SDR-2-CON-RW-ZA-2830 | Single post-Traffic signs Installation | 2027-02-25 → 2027-03-04 (+7d) | 2027-03-15 → 2027-03-22 (+7d) |  | 46d → 40d |
| ZG | **ZONE G** |  | 2027-04-13 → 2027-04-05 (-8d) |  |  |
| 5 | **ROAD WORKS IN ( PH2-COL-MC50 )** |  | 2027-03-28 → 2027-04-03 (+6d) |  |  |
| 11 | **Subgrade** |  | 2026-09-28 → 2026-10-01 (+3d) |  |  |
| SDR-2-CON-RW-ZG-1040 | Subgrade layer works |  | 2026-09-28 → 2026-10-01 A (+3d) | 80% → 100% | 8d → none |
| 9 | **Earth Works Plot** |  | 2026-11-01 → 2026-11-08 (+7d) |  |  |
| SDR-2-CON-RW-ZG-1050 | Plot Excavation for cuttings (all types of soil) |  | 2026-09-28 → 2026-10-05 (+7d) |  | 68d → 67d |
| SDR-2-CON-RW-ZG-2260 | Embankments to the Plot 2 Layer |  | 2026-11-01 → 2026-11-08 (+7d) |  | 69d → 64d |
| SDR-2-CON-RW-ZG-1060 | Embankments to the Plot 3 Layer |  | 2026-11-01 → 2026-11-08 (+7d) |  | 69d → 64d |
| 2 | **Base Course** |  | 2026-09-28 → 2026-10-05 (+7d) |  |  |
| SDR-2-CON-RW-ZG-1070 | Aggregate base course layer |  | 2026-09-28 → 2026-10-05 A (+7d) | 50% → 100% | 8d → none |
| 8 | **Demolition Work** | 2026-09-29 → 2026-10-05 (+6d) | 2026-10-21 → 2026-10-27 (+6d) |  |  |
| SDR-2-CON-RW-ZG-1080 | Removal of curbstone | 2026-09-29 → 2026-10-05 (+6d) | 2026-10-11 → 2026-10-17 (+6d) |  | 8d → 7d |
| SDR-2-CON-RW-ZG-1090 | Milling of wearing course | 2026-10-12 → 2026-10-18 (+6d) | 2026-10-21 → 2026-10-27 (+6d) |  | 8d → 7d |
| 3 | **Asphalt Works** | 2026-10-22 → 2026-10-05 (-17d) | 2026-12-07 → 2026-12-13 (+6d) |  |  |

| ID | Task | Start | Finish | Complete | Total float |
| --- | --- | --- | --- | --- | --- |
| SDR-2-CON-RW-ZG-1100 | Asphalt works 1st Layer with MC-01 | 2026-10-22 → 2026-10-05 A (-17d) | 2026-11-12 → 2026-11-18 (+6d) | 0% → 10% | 8d → 7d |
| SDR-2-CON-RW-ZG-1110 | Asphalt works 2nd layer with RC-02 | 2026-11-14 → 2026-11-19 (+5d) | 2026-12-07 → 2026-12-13 (+6d) |  | 8d → 7d |
| 4 | **Kerbstone Installation** | 2026-09-29 → 2026-10-05 (+6d) | 2026-12-31 → 2027-01-06 (+6d) |  |  |
| SDR-2-CON-RW-ZG-2550 | Kerbstone Installation "all Types" Part 1 | 2026-09-29 → 2026-10-05 (+6d) | 2026-10-19 → 2026-10-25 (+6d) |  | 10d → 9d |
| SDR-2-CON-RW-ZG-1120 | Kerbstone Installation "all Types" Part 2 | 2026-12-08 → 2026-12-14 (+6d) | 2026-12-31 → 2027-01-06 (+6d) |  | 11d → 7d |
| 5 | **Interlock Installation** | 2027-01-02 → 2027-01-07 (+5d) | 2027-01-25 → 2027-01-31 (+6d) |  |  |
| SDR-2-CON-RW-ZG-1130 | Interlock Installation | 2027-01-02 → 2027-01-07 (+5d) | 2027-01-25 → 2027-01-31 (+6d) |  | 11d → 7d |
| 6 | **Road Marking** | 2027-01-26 → 2027-02-01 (+6d) | 2027-02-28 → 2027-03-06 (+6d) |  |  |
| SDR-2-CON-RW-ZG-1140 | Retroreflective Thermoplastic White Traffic lines | 2027-01-26 → 2027-02-01 (+6d) | 2027-02-10 → 2027-02-16 (+6d) |  | 11d → 7d |
| SDR-2-CON-RW-ZG-1150 | Retroreflective Thermoplastic Yellow, Traffic lines | 2027-02-11 → 2027-02-17 (+6d) | 2027-02-28 → 2027-03-06 (+6d) |  | 11d → 7d |
| 7 | **Traffic Signage** | 2027-03-01 → 2027-03-07 (+6d) | 2027-03-28 → 2027-04-03 (+6d) |  |  |
| SDR-2-CON-RW-ZG-1160 | Single post-Traffic signs Installation | 2027-03-01 → 2027-03-07 (+6d) | 2027-03-28 → 2027-04-03 (+6d) |  | 11d → 7d |
| 1 | **ROAD WORKS IN ( PH2-G-MCA0 )** |  | 2027-02-13 → 2027-02-20 (+7d) |  |  |
| 8 | **Demolition Work** | 2026-09-28 → 2026-10-05 (+7d) | 2026-10-15 → 2026-10-22 (+7d) |  |  |
| SDR-2-CON-RW-ZG-1380 | Removal of curbstone | 2026-09-28 → 2026-10-05 (+7d) | 2026-10-07 → 2026-10-14 (+7d) |  | 53d → 48d |
| SDR-2-CON-RW-ZG-1390 | Milling of wearing course | 2026-10-08 → 2026-10-15 (+7d) | 2026-10-15 → 2026-10-22 (+7d) |  | 53d → 48d |
| 3 | **Asphalt Works** | 2026-09-28 → 2026-10-05 (+7d) | 2026-11-01 → 2026-11-08 (+7d) |  |  |
| SDR-2-CON-RW-ZG-1400 | Asphalt works 1st Layer with MC-01 | 2026-09-28 → 2026-10-05 A (+7d) | 2026-10-11 → 2026-10-18 (+7d) | 0% → 25% | 66d → 61d |
| SDR-2-CON-RW-ZG-1410 | Asphalt works 2nd layer with RC-02 | 2026-10-12 → 2026-10-19 (+7d) | 2026-11-01 → 2026-11-08 (+7d) |  | 66d → 61d |
| 4 | **Kerbstone Installation** | 2026-10-19 → 2026-10-26 (+7d) | 2026-11-25 → 2026-12-02 (+7d) |  |  |
| SDR-2-CON-RW-ZG-2570 | Kerbstone Installation "all Types" Part 1 | 2026-10-19 → 2026-10-26 (+7d) | 2026-11-08 → 2026-11-15 (+7d) |  | 27d → 34d |
| SDR-2-CON-RW-ZG-1420 | Kerbstone Installation "all Types" Part 2 | 2026-11-02 → 2026-11-09 (+7d) | 2026-11-25 → 2026-12-02 (+7d) |  | 66d → 61d |
| 5 | **Interlock Installation** | 2026-11-26 → 2026-12-03 (+7d) | 2026-12-19 → 2026-12-26 (+7d) |  |  |
| SDR-2-CON-RW-ZG-1430 | Interlock Installation | 2026-11-26 → 2026-12-03 (+7d) | 2026-12-19 → 2026-12-26 (+7d) |  | 66d → 61d |
| 6 | **Road Marking** | 2026-12-20 → 2026-12-27 (+7d) | 2027-01-20 → 2027-01-27 (+7d) |  |  |
| SDR-2-CON-RW-ZG-1440 | Retroreflective Thermoplastic White Traffic lines | 2026-12-20 → 2026-12-27 (+7d) | 2027-01-04 → 2027-01-11 (+7d) |  | 66d → 61d |
| SDR-2-CON-RW-ZG-1450 | Retroreflective Thermoplastic Yellow, Traffic lines | 2027-01-05 → 2027-01-12 (+7d) | 2027-01-20 → 2027-01-27 (+7d) |  | 66d → 61d |
| 7 | **Traffic Signage** | 2027-01-21 → 2027-01-28 (+7d) | 2027-02-13 → 2027-02-20 (+7d) |  |  |
| SDR-2-CON-RW-ZG-1460 | Single post-Traffic signs Installation | 2027-01-21 → 2027-01-28 (+7d) | 2027-02-13 → 2027-02-20 (+7d) |  | 66d → 61d |
| 6 | **ROAD WORKS IN ( PH2-ART-MC00 )** |  | 2027-03-30 → 2027-04-05 (+6d) |  |  |
| 2 | **Base Course** |  | 2026-09-28 → 2026-10-05 (+7d) |  |  |
| SDR-2-CON-RW-ZG-1220 | Aggregate base course layer |  | 2026-09-28 → 2026-10-05 A (+7d) | 80% → 100% | 33d → none |
| 8 | **Demolition Work** | 2026-09-29 → 2026-10-05 (+6d) | 2026-10-22 → 2026-10-28 (+6d) |  |  |
| SDR-2-CON-RW-ZG-1230 | Removal of curbstone | 2026-09-29 → 2026-10-05 (+6d) | 2026-10-07 → 2026-10-13 (+6d) |  | 33d → 28d |
| SDR-2-CON-RW-ZG-1240 | Milling of wearing course | 2026-10-08 → 2026-10-14 (+6d) | 2026-10-22 → 2026-10-28 (+6d) |  | 33d → 28d |
| 3 | **Asphalt Works** | 2026-10-24 → 2026-10-05 (-19d) | 2026-12-10 → 2026-12-16 (+6d) |  |  |
| SDR-2-CON-RW-ZG-1250 | Asphalt works 1st Layer with MC-01 | 2026-10-24 → 2026-10-05 A (-19d) | 2026-11-16 → 2026-11-22 (+6d) | 0% → 10% | 33d → 28d |
| SDR-2-CON-RW-ZG-1260 | Asphalt works 2nd layer with RC-02 | 2026-11-17 → 2026-11-23 (+6d) | 2026-12-10 → 2026-12-16 (+6d) |  | 33d → 28d |
| 4 | **Kerbstone Installation** | 2026-09-28 → 2026-10-05 (+7d) | 2027-01-03 → 2027-01-09 (+6d) |  |  |
| SDR-2-CON-RW-ZG-2560 | Kerbstone Installation "all Types" Part 1 | 2026-09-28 → 2026-10-05 (+7d) | 2026-10-18 → 2026-10-25 (+7d) |  | 27d → 34d |
| SDR-2-CON-RW-ZG-1270 | Kerbstone Installation "all Types" Part 2 | 2026-12-12 → 2026-12-17 (+5d) | 2027-01-03 → 2027-01-09 (+6d) |  | 33d → 28d |
| 5 | **Interlock Installation** | 2027-01-04 → 2027-01-10 (+6d) | 2027-01-27 → 2027-02-02 (+6d) |  |  |
| SDR-2-CON-RW-ZG-1280 | Interlock Installation | 2027-01-04 → 2027-01-10 (+6d) | 2027-01-27 → 2027-02-02 (+6d) |  | 33d → 28d |
| 6 | **Road Marking** | 2027-01-28 → 2027-02-03 (+6d) | 2027-03-02 → 2027-03-08 (+6d) |  |  |
| SDR-2-CON-RW-ZG-1290 | Retroreflective Thermoplastic White Traffic lines | 2027-01-28 → 2027-02-03 (+6d) | 2027-02-13 → 2027-02-18 (+5d) |  | 33d → 28d |
| SDR-2-CON-RW-ZG-1300 | Retroreflective Thermoplastic Yellow, Traffic lines | 2027-02-14 → 2027-02-20 (+6d) | 2027-03-02 → 2027-03-08 (+6d) |  | 33d → 28d |
| 7 | **Traffic Signage** | 2027-03-03 → 2027-03-14 (+11d) | 2027-03-30 → 2027-04-05 (+6d) |  |  |
| SDR-2-CON-RW-ZG-1310 | Single post-Traffic signs Installation | 2027-03-03 → 2027-03-14 (+11d) | 2027-03-30 → 2027-04-05 (+6d) |  | 33d → 28d |
| 8 | **ROAD WORKS IN ( PH2-G-MCE0 )** |  | 2027-04-05 → 2027-03-29 (-7d) |  |  |
| 8 | **Demolition Work** | 2026-09-28 → 2026-10-05 (+7d) | 2026-11-14 → 2026-11-21 (+7d) |  |  |
| SDR-2-CON-RW-ZG-1530 | Removal of curbstone | 2026-09-28 → 2026-10-05 (+7d) | 2026-10-01 → 2026-10-08 (+7d) |  | 59d → 66d |
| SDR-2-CON-RW-ZG-1540 | Milling of wearing course | 2026-11-09 → 2026-11-16 (+7d) | 2026-11-14 → 2026-11-21 (+7d) |  | 27d → 34d |
| 3 | **Asphalt Works** |  | 2026-12-15 → 2026-12-08 (-7d) |  |  |
| SDR-2-CON-RW-ZG-1550 | Asphalt works 1st Layer with MC-01 |  | 2026-11-28 → 2026-10-01 A (-58d) | 75% → 100% | 27d → none |
| SDR-2-CON-RW-ZG-1560 | Asphalt works 2nd layer with RC-02 | 2026-11-29 → 2026-11-22 (-7d) | 2026-12-15 → 2026-12-08 (-7d) |  | 27d → 34d |
| 4 | **Kerbstone Installation** | 2026-09-28 → 2026-10-05 (+7d) | 2027-01-09 → 2027-01-02 (-7d) |  |  |
| SDR-2-CON-RW-ZG-2580 | Kerbstone Installation "all Types" Part 1 | 2026-09-28 → 2026-10-05 (+7d) | 2026-10-18 → 2026-10-25 (+7d) |  | 62d → 57d |
| SDR-2-CON-RW-ZG-1570 | Kerbstone Installation "all Types" Part 2 | 2026-12-16 → 2026-12-09 (-7d) | 2027-01-09 → 2027-01-02 (-7d) |  | 27d → 34d |
| 5 | **Interlock Installation** | 2027-01-10 → 2027-01-03 (-7d) | 2027-02-02 → 2027-01-26 (-7d) |  |  |
| SDR-2-CON-RW-ZG-1580 | Interlock Installation | 2027-01-10 → 2027-01-03 (-7d) | 2027-02-02 → 2027-01-26 (-7d) |  | 27d → 34d |
| 6 | **Road Marking** | 2027-02-03 → 2027-01-27 (-7d) | 2027-03-08 → 2027-03-01 (-7d) |  |  |
| SDR-2-CON-RW-ZG-1590 | Retroreflective Thermoplastic White Traffic lines | 2027-02-03 → 2027-01-27 (-7d) | 2027-02-18 → 2027-02-11 (-7d) |  | 27d → 34d |
| SDR-2-CON-RW-ZG-1600 | Retroreflective Thermoplastic Yellow, Traffic lines | 2027-02-20 → 2027-02-13 (-7d) | 2027-03-08 → 2027-03-01 (-7d) |  | 27d → 34d |
| 7 | **Traffic Signage** | 2027-03-14 → 2027-03-02 (-12d) | 2027-04-05 → 2027-03-29 (-7d) |  |  |
| SDR-2-CON-RW-ZG-1610 | Single post-Traffic signs Installation | 2027-03-14 → 2027-03-02 (-12d) | 2027-04-05 → 2027-03-29 (-7d) |  | 27d → 34d |
| 4 | **ROAD WORKS IN ( PH2-G-MCD0 )** |  | 2027-04-13 → 2027-03-18 (-26d) |  |  |
| 11 | **Subgrade** |  | 2026-10-11 → 2026-09-30 (-11d) |  |  |
| SDR-2-CON-RW-ZG-1640 | Subgrade layer works |  | 2026-10-11 → 2026-09-30 A (-11d) | 45% → 100% | 17d → none |
| 9 | **Earth Works Plot** |  | 2026-10-18 → 2026-10-25 (+7d) |  |  |
| SDR-2-CON-RW-ZG-1650 | Plot Excavation for cuttings (all types of soil) |  | 2026-10-11 → 2026-10-05 (-6d) |  | 47d → 74d |

| ID | Task | Start | Finish | Complete | Total float | Predecessors |
| --- | --- | --- | --- | --- | --- | --- |
| SDR-2-CON-RW-ZG-2420 | Embankments to the Plot 1 Layer |  | 2026-10-18 → 2026-10-25 (+7d) |  | 62d → 57d |  |
| SDR-2-CON-RW-ZG-1660 | Embankments to the Plot 2 Layer |  | 2026-10-18 → 2026-10-25 (+7d) |  | 70d → 64d |  |
| 2 | **Base Course** | 2026-10-12 → 2026-10-01 (-11d) | 2026-10-29 → 2026-10-05 (-24d) |  |  |  |
| SDR-2-CON-RW-ZG-1670 | Aggregate base course layer | 2026-10-12 → 2026-10-01 A (-11d) | 2026-10-29 → 2026-10-05 A (-24d) | 0% → 100% | 17d → none |  |
| 8 | **Demolition Work** | 2026-10-31 → 2026-10-05 (-26d) | 2026-11-09 → 2026-10-14 (-26d) |  |  |  |
| SDR-2-CON-RW-ZG-1680 | Removal of curbstone | 2026-10-31 → 2026-10-05 (-26d) | 2026-11-03 → 2026-10-08 (-26d) |  | 17d → 40d |  |
| SDR-2-CON-RW-ZG-1690 | Milling of wearing course | 2026-11-04 → 2026-10-10 (-25d) | 2026-11-09 → 2026-10-14 (-26d) |  | 17d → 40d |  |
| 3 | **Asphalt Works** | 2026-11-10 → 2026-10-15 (-26d) | 2026-12-24 → 2026-11-29 (-25d) |  |  |  |
| SDR-2-CON-RW-ZG-1700 | Asphalt works 1st Layer with MC-01 | 2026-11-10 → 2026-10-15 (-26d) | 2026-11-30 → 2026-11-04 (-26d) |  | 17d → 40d |  |
| SDR-2-CON-RW-ZG-1710 | Asphalt works 2nd layer with RC-02 | 2026-12-01 → 2026-11-05 (-26d) | 2026-12-24 → 2026-11-29 (-25d) |  | 17d → 40d |  |
| 4 | **Kerbstone Installation** | 2026-10-12 → 2026-10-05 (-7d) | 2027-01-18 → 2026-12-23 (-26d) |  |  |  |
| SDR-2-CON-RW-ZG-2590 | Kerbstone Installation "all Types" Part 1 | 2026-10-12 → 2026-10-05 (-7d) | 2026-11-01 → 2026-10-25 (-7d) |  | 22d → 29d |  |
| SDR-2-CON-RW-ZG-1720 | Kerbstone Installation "all Types" Part 2 | 2026-12-26 → 2026-11-30 (-26d) | 2027-01-18 → 2026-12-23 (-26d) |  | 17d → 40d |  |
| 5 | **Interlock Installation** | 2027-01-19 → 2026-12-24 (-26d) | 2027-02-10 → 2027-01-16 (-25d) |  |  |  |
| SDR-2-CON-RW-ZG-1730 | Interlock Installation | 2027-01-19 → 2026-12-24 (-26d) | 2027-02-10 → 2027-01-16 (-25d) |  | 17d → 40d |  |
| 6 | **Road Marking** | 2027-02-11 → 2027-01-17 (-25d) | 2027-03-21 → 2027-02-17 (-32d) |  |  |  |
| SDR-2-CON-RW-ZG-1740 | Retroreflective Thermoplastic White Traffic lines | 2027-02-11 → 2027-01-17 (-25d) | 2027-02-28 → 2027-02-01 (-27d) |  | 17d → 40d |  |
| SDR-2-CON-RW-ZG-1750 | Retroreflective Thermoplastic Yellow, Traffic lines | 2027-03-01 → 2027-02-02 (-27d) | 2027-03-21 → 2027-02-17 (-32d) |  | 17d → 40d |  |
| 7 | **Traffic Signage** | 2027-03-22 → 2027-02-18 (-32d) | 2027-04-13 → 2027-03-18 (-26d) |  |  |  |
| SDR-2-CON-RW-ZG-1760 | Single post-Traffic signs Installation | 2027-03-22 → 2027-02-18 (-32d) | 2027-04-13 → 2027-03-18 (-26d) |  | 17d → 40d |  |
| 2 | **ROAD WORKS IN ( PH2-G-MCF0 )** |  | 2027-03-24 → 2027-03-17 (-7d) |  |  |  |
| 8 | **Demolition Work** | 2026-09-28 → 2026-10-05 (+7d) | 2026-11-09 → 2026-11-02 (-7d) |  |  |  |
| SDR-2-CON-RW-ZG-1830 | Removal of curbstone | 2026-09-28 → 2026-10-05 (+7d) | 2026-10-05 → 2026-10-12 (+7d) |  | 45d → 40d |  |
| SDR-2-CON-RW-ZG-1840 | Milling of wearing course | 2026-11-02 → 2026-10-26 (-7d) | 2026-11-09 → 2026-11-02 (-7d) |  | 22d → 29d |  |
| 3 | **Asphalt Works** |  | 2026-12-03 → 2026-11-26 (-7d) |  |  |  |
| SDR-2-CON-RW-ZG-1850 | Asphalt works 1st Layer with MC-01 |  |  |  |  | SDR-2-CON-RW-ZG-1820, SDR-2-CON-RW-ZG-1840 FF → SDR-2-CON-RW-ZG-1820 FF, SDR-2-CON-RW-ZG-1840 FF |
| SDR-2-CON-RW-ZG-1860 | Asphalt works 2nd layer with RC-02 | 2026-11-10 → 2026-11-03 (-7d) | 2026-12-03 → 2026-11-26 (-7d) |  | 22d → 29d | SDR-2-CON-RW-ZG-1650, SDR-2-CON-RW-ZG-1850 → SDR-2-CON-RW-ZG-1850 |
| 4 | **Kerbstone Installation** | 2026-09-28 → 2026-10-05 (+7d) | 2026-12-28 → 2026-12-21 (-7d) |  |  |  |
| SDR-2-CON-RW-ZG-2600 | Kerbstone Installation "all Types" Part 1 | 2026-09-28 → 2026-10-05 (+7d) | 2026-10-18 → 2026-10-25 (+7d) |  | 32d → 27d |  |
| SDR-2-CON-RW-ZG-1870 | Kerbstone Installation "all Types" Part 2 | 2026-12-05 → 2026-11-28 (-7d) | 2026-12-28 → 2026-12-21 (-7d) |  | 22d → 29d |  |
| 5 | **Interlock Installation** | 2026-12-29 → 2026-12-22 (-7d) | 2027-01-21 → 2027-01-14 (-7d) |  |  |  |
| SDR-2-CON-RW-ZG-1880 | Interlock Installation | 2026-12-29 → 2026-12-22 (-7d) | 2027-01-21 → 2027-01-14 (-7d) |  | 22d → 29d |  |
| 6 | **Road Marking** | 2027-01-23 → 2027-01-16 (-7d) | 2027-02-24 → 2027-02-16 (-8d) |  |  |  |
| SDR-2-CON-RW-ZG-1890 | Retroreflective Thermoplastic White Traffic lines | 2027-01-23 → 2027-01-16 (-7d) | 2027-02-07 → 2027-01-31 (-7d) |  | 22d → 29d |  |
| SDR-2-CON-RW-ZG-1900 | Retroreflective Thermoplastic Yellow, Traffic lines | 2027-02-08 → 2027-02-01 (-7d) | 2027-02-24 → 2027-02-16 (-8d) |  | 22d → 29d |  |
| 7 | **Traffic Signage** | 2027-02-25 → 2027-02-17 (-8d) | 2027-03-24 → 2027-03-17 (-7d) |  |  |  |
| SDR-2-CON-RW-ZG-1910 | Single post-Traffic signs Installation | 2027-02-25 → 2027-02-17 (-8d) | 2027-03-24 → 2027-03-17 (-7d) |  | 22d → 29d |  |
| 3 | **ROAD WORKS IN ( PH2-G-MCG0 )** |  | 2027-03-08 → 2027-03-20 (+12d) |  |  |  |
| 9 | **Earth Works Plot** |  | 2026-09-29 → 2026-10-06 (+7d) |  |  |  |
| SDR-2-CON-RW-ZG-1950 | Plot Excavation for cuttings (all types of soil) |  | 2026-09-28 → 2026-10-05 (+7d) | 0% → 45% | 48d → 43d |  |
| SDR-2-CON-RW-ZG-2500 | Embankments to the Plot 1 Layer |  | 2026-09-28 → 2026-10-05 (+7d) |  | 66d → 61d |  |
| SDR-2-CON-RW-ZG-1960 | Embankments to the Plot 2 Layer |  | 2026-09-29 → 2026-10-06 (+7d) |  | 100d → 95d |  |
| 8 | **Demolition Work** | 2026-09-28 → 2026-10-05 (+7d) | 2026-11-03 → 2026-11-10 (+7d) |  |  |  |
| SDR-2-CON-RW-ZG-1980 | Removal of curbstone | 2026-09-28 → 2026-10-05 (+7d) | 2026-10-06 → 2026-10-13 (+7d) |  | 48d → 43d |  |
| SDR-2-CON-RW-ZG-1990 | Milling of wearing course | 2026-10-26 → 2026-11-02 (+7d) | 2026-11-03 → 2026-11-10 (+7d) |  | 32d → 27d |  |
| 3 | **Asphalt Works** |  | 2026-11-22 → 2026-11-29 (+7d) |  |  |  |
| SDR-2-CON-RW-ZG-2010 | Asphalt works 2nd layer with RC-02 | 2026-11-04 → 2026-11-11 (+7d) | 2026-11-22 → 2026-11-29 (+7d) |  | 32d → 27d |  |
| 4 | **Kerbstone Installation** | 2026-09-28 → 2026-10-05 (+7d) | 2026-12-16 → 2026-12-23 (+7d) |  |  |  |
| SDR-2-CON-RW-ZG-2610 | Kerbstone Installation "all Types" Part 1 | 2026-09-28 → 2026-10-05 (+7d) | 2026-10-18 → 2026-10-25 (+7d) |  | 38d → 33d |  |
| SDR-2-CON-RW-ZG-2020 | Kerbstone Installation "all Types" Part 2 | 2026-11-23 → 2026-11-30 (+7d) | 2026-12-16 → 2026-12-23 (+7d) |  | 32d → 27d |  |
| 5 | **Interlock Installation** | 2026-12-17 → 2026-12-24 (+7d) | 2027-01-10 → 2027-01-17 (+7d) |  |  |  |
| SDR-2-CON-RW-ZG-2030 | Interlock Installation | 2026-12-17 → 2026-12-24 (+7d) | 2027-01-10 → 2027-01-17 (+7d) |  | 32d → 27d |  |
| 6 | **Road Marking** | 2027-01-11 → 2027-01-18 (+7d) | 2027-02-11 → 2027-02-18 (+7d) |  |  |  |
| SDR-2-CON-RW-ZG-2040 | Retroreflective Thermoplastic White Traffic lines | 2027-01-11 → 2027-01-18 (+7d) | 2027-01-26 → 2027-02-02 (+7d) |  | 32d → 27d |  |
| SDR-2-CON-RW-ZG-2050 | Retroreflective Thermoplastic Yellow, Traffic lines | 2027-01-27 → 2027-02-03 (+7d) | 2027-02-11 → 2027-02-18 (+7d) |  | 32d → 27d |  |
| 7 | **Traffic Signage** | 2027-02-13 → 2027-02-20 (+7d) | 2027-03-08 → 2027-03-20 (+12d) |  |  |  |
| SDR-2-CON-RW-ZG-2060 | Single post-Traffic signs Installation | 2027-02-13 → 2027-02-20 (+7d) | 2027-03-08 → 2027-03-20 (+12d) |  | 32d → 27d |  |
| 7 | **ROAD WORKS IN ( PH2-G-MCZ0 )** |  | 2027-03-08 → 2027-03-20 (+12d) |  |  |  |
| 8 | **Demolition Work** | 2026-10-20 → 2026-10-27 (+7d) | 2026-11-07 → 2026-11-14 (+7d) |  |  |  |
| SDR-2-CON-RW-ZG-2130 | Removal of curbstone | 2026-10-20 → 2026-10-27 (+7d) | 2026-10-26 → 2026-11-02 (+7d) |  | 32.1d → 27.1d |  |
| SDR-2-CON-RW-ZG-2140 | Milling of wearing course | 2026-10-26 → 2026-11-02 (+7d) | 2026-11-07 → 2026-11-14 (+7d) |  | 32.1d → 27.1d |  |
| 3 | **Asphalt Works** |  | 2026-11-22 → 2026-11-29 (+7d) |  |  |  |
| SDR-2-CON-RW-ZG-2160 | Asphalt works 2nd layer with RC-02 | 2026-11-07 → 2026-11-14 (+7d) | 2026-11-22 → 2026-11-29 (+7d) |  | 32.1d → 27.1d |  |
| 4 | **Kerbstone Installation** | 2026-09-28 → 2026-10-05 (+7d) | 2026-12-16 → 2026-12-23 (+7d) |  |  |  |
| SDR-2-CON-RW-ZG-2620 | Kerbstone Installation "all Types" Part 1 | 2026-09-28 → 2026-10-05 (+7d) | 2026-10-18 → 2026-10-25 (+7d) |  | 62d → 57d |  |
| SDR-2-CON-RW-ZG-2170 | Kerbstone Installation "all Types" Part 2 | 2026-11-22 → 2026-11-29 (+7d) | 2026-12-16 → 2026-12-23 (+7d) |  | 32.1d → 27.1d |  |
| 5 | **Interlock Installation** | 2026-12-16 → 2026-12-23 (+7d) | 2027-01-10 → 2027-01-17 (+7d) |  |  |  |
| SDR-2-CON-RW-ZG-2180 | Interlock Installation | 2026-12-16 → 2026-12-23 (+7d) | 2027-01-10 → 2027-01-17 (+7d) |  | 32.1d → 27.1d |  |
| 6 | **Road Marking** | 2027-01-10 → 2027-01-17 (+7d) | 2027-02-11 → 2027-02-18 (+7d) |  |  |  |
| SDR-2-CON-RW-ZG-2190 | Retroreflective Thermoplastic White Traffic lines | 2027-01-10 → 2027-01-17 (+7d) | 2027-01-26 → 2027-02-02 (+7d) |  | 32.1d → 27.1d |  |

| ID | Task | Start | Finish | Total float |
| --- | --- | --- | --- | --- |
| SDR-2-CON-RW-ZG-2200 | Retroreflective Thermoplastic Yellow, Traffic lines | 2027-01-26 → 2027-02-02 (+7d) | 2027-02-11 → 2027-02-18 (+7d) | 32.1d → 27.1d |
| 7 | **Traffic Signage** | 2027-02-11 → 2027-02-18 (+7d) | 2027-03-08 → 2027-03-20 (+12d) |  |
| SDR-2-CON-RW-ZG-2210 | Single post-Traffic signs Installation | 2027-02-11 → 2027-02-18 (+7d) | 2027-03-08 → 2027-03-20 (+12d) | 32.1d → 27.1d |
| ST | **Storm Water Drainage Network** |  | 2027-05-01 → 2027-05-08 (+7d) |  |
| ZA | **ZONE A** |  | 2027-05-01 → 2027-05-08 (+7d) |  |
| 11 | **STORM WATER LINE IN ( PH2-A-MCB0 )** |  | 2027-02-24 → 2027-03-03 (+7d) |  |
| 8 | **Pipes Works** |  | 2027-01-11 → 2027-01-18 (+7d) |  |
| 2 | **Pipes Laying** |  | 2026-12-15 → 2026-12-22 (+7d) |  |
| SDR-2-CON-ST-ZA-1090 | Install ST GRP Pipes |  | 2026-12-15 → 2026-12-22 (+7d) | 7.1d → 8.1d |
| 6 | **Testing** | 2026-12-15 → 2026-12-22 (+7d) | 2027-01-09 → 2027-01-16 (+7d) |  |
| SDR-2-CON-ST-ZA-3440 | Testing ST GRP Pipes | 2026-12-15 → 2026-12-22 (+7d) | 2027-01-09 → 2027-01-16 (+7d) | 7.1d → 8.1d |
| 3 | **Backfilling** | 2026-12-17 → 2026-12-24 (+7d) | 2027-01-11 → 2027-01-18 (+7d) |  |
| SDR-2-CON-ST-ZA-1140 | Backfilling ST GRP Pipes | 2026-12-17 → 2026-12-24 (+7d) | 2027-01-11 → 2027-01-18 (+7d) | 7.1d → 8.1d |
| 4 | **Manholes** |  | 2027-01-11 → 2027-01-18 (+7d) |  |
| 1 | **Excavation** |  | 2026-11-17 → 2026-11-24 (+7d) |  |
| SDR-2-CON-ST-ZA-1210 | Excavation Manholes Section 3 |  | 2026-11-17 → 2026-11-24 (+7d) | 7d → 8d |
| 2 | **bedding Works** |  | 2026-11-17 → 2026-11-24 (+7d) |  |
| SDR-2-CON-ST-ZA-3520 | Sand bedding for Manholes |  | 2026-11-17 → 2026-11-24 (+7d) | 7d → 8d |
| 3 | **Install Manholes** |  | 2026-11-17 → 2026-11-24 (+7d) |  |
| SDR-2-CON-ST-ZA-3600 | Manholes Installation |  | 2026-11-17 → 2026-11-24 (+7d) | 7d → 8d |
| 4 | **Testing** | 2026-11-24 → 2026-12-01 (+7d) | 2026-12-17 → 2026-12-24 (+7d) |  |
| SDR-2-CON-ST-ZA-3680 | Testing for Manholes | 2026-11-24 → 2026-12-01 (+7d) | 2026-12-17 → 2026-12-24 (+7d) | 7d → 8d |
| 5 | **Backfilling** | 2026-12-19 → 2026-12-26 (+7d) | 2027-01-11 → 2027-01-18 (+7d) |  |
| SDR-2-CON-ST-ZA-3760 | Backfilling for Manholes | 2026-12-19 → 2026-12-26 (+7d) | 2027-01-11 → 2027-01-18 (+7d) | 7d → 8d |
| 5 | **Catch basin** |  | 2027-02-24 → 2027-03-03 (+7d) |  |
| 1 | **Excavation** |  | 2026-10-22 → 2026-10-29 (+7d) |  |
| SDR-2-CON-ST-ZA-6930 | Excavation for Catch basin Section 1 |  | 2026-09-28 → 2026-10-05 (+7d) | 111d → 106d |
| SDR-2-CON-ST-ZA-1300 | Excavation for Catch basin Section 2 | 2026-09-29 → 2026-10-06 (+7d) | 2026-10-22 → 2026-10-29 (+7d) | 111d → 106d |
| 2 | **bedding Works** | 2026-10-24 → 2026-10-31 (+7d) | 2026-11-16 → 2026-11-23 (+7d) |  |
| SDR-2-CON-ST-ZA-3840 | Sand Dedding for Catch basin | 2026-10-24 → 2026-10-31 (+7d) | 2026-11-16 → 2026-11-23 (+7d) | 111d → 106d |
| 3 | **Install Catch basin** | 2026-11-17 → 2026-11-24 (+7d) | 2026-12-10 → 2026-12-17 (+7d) |  |
| SDR-2-CON-ST-ZA-3900 | Install Catch basin | 2026-11-17 → 2026-11-24 (+7d) | 2026-12-10 → 2026-12-17 (+7d) | 111d → 106d |
| 4 | **Testing** | 2026-11-17 → 2026-11-24 (+7d) | 2026-12-10 → 2026-12-17 (+7d) |  |
| SDR-2-CON-ST-ZA-3960 | Testing for Catch basin pipe | 2026-11-17 → 2026-11-24 (+7d) | 2026-12-10 → 2026-12-17 (+7d) | 111d → 106d |
| 5 | **Backfilling** | 2026-11-17 → 2026-11-24 (+7d) | 2027-02-24 → 2027-03-03 (+7d) |  |
| SDR-2-CON-ST-ZA-6940 | Backfilling for Catch basin Section 1 | 2026-11-17 → 2026-11-24 (+7d) | 2026-11-29 → 2026-12-06 (+7d) | 123d → 118d |
| SDR-2-CON-ST-ZA-4020 | Backfilling for Catch basin Section 2 | 2027-02-11 → 2027-02-18 (+7d) | 2027-02-24 → 2027-03-03 (+7d) | 57.1d → 52.1d |
| 12 | **STORM WATER LINE IN ( PH2-A-MCD0 )** |  | 2027-04-22 → 2027-04-28 (+6d) |  |
| 8 | **Pipes Works** |  | 2026-11-16 → 2026-11-23 (+7d) |  |
| 7 | **bedding Works** |  | 2026-09-28 → 2026-10-05 (+7d) |  |
| SDR-2-CON-ST-ZA-4090 | Sand bedding for GRP Pipes |  | 2026-09-28 → 2026-10-05 (+7d) | 53d → 54d |
| 2 | **Pipes Laying** |  | 2026-09-28 → 2026-10-05 (+7d) |  |
| SDR-2-CON-ST-ZA-4040 | Install ST GRP Pipes |  | 2026-09-28 → 2026-10-05 (+7d) | 53d → 54d |
| 6 | **Testing** | 2026-09-29 → 2026-10-06 (+7d) | 2026-10-22 → 2026-10-29 (+7d) |  |
| SDR-2-CON-ST-ZA-4080 | Testing ST GRP Pipes | 2026-09-29 → 2026-10-06 (+7d) | 2026-10-22 → 2026-10-29 (+7d) | 53d → 54d |
| 3 | **Backfilling** | 2026-10-24 → 2026-10-31 (+7d) | 2026-11-16 → 2026-11-23 (+7d) |  |
| SDR-2-CON-ST-ZA-4050 | Backfilling ST GRP Pipes | 2026-10-24 → 2026-10-31 (+7d) | 2026-11-16 → 2026-11-23 (+7d) | 53d → 54d |
| 4 | **Manholes** |  | 2026-11-17 → 2026-11-24 (+7d) |  |
| 2 | **bedding Works** |  | 2026-09-28 → 2026-10-05 (+7d) |  |
| SDR-2-CON-ST-ZA-4100 | Sand bedding for Manholes |  | 2026-09-28 → 2026-10-05 (+7d) | 92.91d → 87.91d |
| 3 | **Install Manholes** |  | 2026-09-29 → 2026-10-06 (+7d) |  |
| SDR-2-CON-ST-ZA-4110 | Manholes Installation |  | 2026-09-29 → 2026-10-06 (+7d) | 91d → 86d |
| 4 | **Testing** | 2026-09-30 → 2026-10-07 (+7d) | 2026-10-24 → 2026-10-31 (+7d) |  |
| SDR-2-CON-ST-ZA-4120 | Testing for Manholes | 2026-09-30 → 2026-10-07 (+7d) | 2026-10-24 → 2026-10-31 (+7d) | 91d → 86d |
| 5 | **Backfilling** | 2026-10-25 → 2026-11-01 (+7d) | 2026-11-17 → 2026-11-24 (+7d) |  |
| SDR-2-CON-ST-ZA-4130 | Backfilling for Manholes | 2026-10-25 → 2026-11-01 (+7d) | 2026-11-17 → 2026-11-24 (+7d) | 91d → 86d |
| 5 | **Catch basin** |  | 2027-04-22 → 2027-04-28 (+6d) |  |
| 1 | **Excavation** |  | 2026-11-15 → 2026-11-22 (+7d) |  |
| SDR-2-CON-ST-ZA-6970 | Excavation for Catch basin Section 1 |  | 2026-09-29 → 2026-10-06 (+7d) | 127d → 121d |
| SDR-2-CON-ST-ZA-6410 | Excavation for Catch basin Section 2 | 2026-09-30 → 2026-10-07 (+7d) | 2026-10-24 → 2026-10-31 (+7d) | 127d → 121d |
| SDR-2-CON-ST-ZA-4070 | Excavation for Catch basin Section 3 | 2026-10-25 → 2026-11-01 (+7d) | 2026-11-15 → 2026-11-22 (+7d) | 127d → 121d |
| 2 | **bedding Works** | 2026-12-15 → 2026-12-22 (+7d) | 2027-01-07 → 2027-01-14 (+7d) |  |
| SDR-2-CON-ST-ZA-4140 | Sand Dedding for Catch basin | 2026-12-15 → 2026-12-22 (+7d) | 2027-01-07 → 2027-01-14 (+7d) | 102d → 96d |
| 3 | **Install Catch basin** | 2027-01-09 → 2027-01-16 (+7d) | 2027-02-01 → 2027-02-08 (+7d) |  |
| SDR-2-CON-ST-ZA-4150 | Install Catch basin | 2027-01-09 → 2027-01-16 (+7d) | 2027-02-01 → 2027-02-08 (+7d) | 102d → 96d |
| 4 | **Testing** | 2027-03-31 → 2027-04-06 (+6d) | 2027-04-11 → 2027-04-17 (+6d) |  |
| SDR-2-CON-ST-ZA-4160 | Testing for Catch basin pipe | 2027-03-31 → 2027-04-06 (+6d) | 2027-04-11 → 2027-04-17 (+6d) | 58d → 53d |
| 5 | **Backfilling** | 2027-04-12 → 2027-04-18 (+6d) | 2027-04-22 → 2027-04-28 (+6d) |  |
| SDR-2-CON-ST-ZA-4170 | Backfilling for Catch basin | 2027-04-12 → 2027-04-18 (+6d) | 2027-04-22 → 2027-04-28 (+6d) | 58d → 53d |
| 13 | **STORM WATER LINE IN ( PH2-A-MCE0 )** |  | 2027-03-03 → 2027-03-15 (+12d) |  |

| ID | Task | Start | Finish | Total float |
| --- | --- | --- | --- | --- |
| 8 | **Pipes Works** |  | 2026-11-16 → 2026-11-23 (+7d) |  |
| 7 | **bedding Works** |  | 2026-09-28 → 2026-10-05 (+7d) |  |
| SDR-2-CON-ST-ZA-4240 | Sand bedding for GRP Pipes |  | 2026-09-28 → 2026-10-05 (+7d) | 76d → 71d |
| 2 | **Pipes Laying** |  | 2026-09-28 → 2026-10-05 (+7d) |  |
| SDR-2-CON-ST-ZA-4190 | Install ST GRP Pipes |  | 2026-09-28 → 2026-10-05 (+7d) | 76d → 71d |
| 6 | **Testing** | 2026-09-29 → 2026-10-06 (+7d) | 2026-10-22 → 2026-10-29 (+7d) |  |
| SDR-2-CON-ST-ZA-4230 | Testing ST GRP Pipes | 2026-09-29 → 2026-10-06 (+7d) | 2026-10-22 → 2026-10-29 (+7d) | 76d → 71d |
| 3 | **Backfilling** | 2026-10-24 → 2026-10-31 (+7d) | 2026-11-16 → 2026-11-23 (+7d) |  |
| SDR-2-CON-ST-ZA-4200 | Backfilling ST GRP Pipes | 2026-10-24 → 2026-10-31 (+7d) | 2026-11-16 → 2026-11-23 (+7d) | 76d → 71d |
| 4 | **Manholes** |  | 2026-11-16 → 2026-11-23 (+7d) |  |
| 2 | **bedding Works** |  | 2026-09-28 → 2026-10-05 (+7d) |  |
| SDR-2-CON-ST-ZA-4250 | Sand bedding for Manholes |  | 2026-09-28 → 2026-10-05 (+7d) | 78d → 73d |
| 3 | **Install Manholes** |  | 2026-09-28 → 2026-10-05 (+7d) |  |
| SDR-2-CON-ST-ZA-4260 | Manholes Installation |  | 2026-09-28 → 2026-10-05 (+7d) | 78d → 73d |
| 4 | **Testing** | 2026-09-29 → 2026-10-06 (+7d) | 2026-10-22 → 2026-10-29 (+7d) |  |
| SDR-2-CON-ST-ZA-4270 | Testing for Manholes | 2026-09-29 → 2026-10-06 (+7d) | 2026-10-22 → 2026-10-29 (+7d) | 78d → 73d |
| 5 | **Backfilling** | 2026-10-24 → 2026-10-31 (+7d) | 2026-11-16 → 2026-11-23 (+7d) |  |
| SDR-2-CON-ST-ZA-4280 | Backfilling for Manholes | 2026-10-24 → 2026-10-31 (+7d) | 2026-11-16 → 2026-11-23 (+7d) | 78d → 73d |
| 5 | **Catch basin** |  | 2027-03-03 → 2027-03-15 (+12d) |  |
| 1 | **Excavation** |  | 2026-10-31 → 2026-11-07 (+7d) |  |
| SDR-2-CON-ST-ZA-6440 | Excavation for Catch basin Section 1 |  | 2026-09-28 → 2026-10-05 (+7d) | 89d → 84d |
| SDR-2-CON-ST-ZA-4220 | Excavation for Catch basin Section 2 | 2026-10-07 → 2026-10-14 (+7d) | 2026-10-31 → 2026-11-07 (+7d) | 89d → 84d |
| 2 | **bedding Works** | 2026-12-15 → 2026-12-22 (+7d) | 2027-01-07 → 2027-01-14 (+7d) |  |
| SDR-2-CON-ST-ZA-4290 | Sand Dedding for Catch basin | 2026-12-15 → 2026-12-22 (+7d) | 2027-01-07 → 2027-01-14 (+7d) | 51d → 46d |
| 3 | **Install Catch basin** | 2027-01-09 → 2027-01-16 (+7d) | 2027-02-01 → 2027-02-08 (+7d) |  |
| SDR-2-CON-ST-ZA-4300 | Install Catch basin | 2027-01-09 → 2027-01-16 (+7d) | 2027-02-01 → 2027-02-08 (+7d) | 51d → 46d |
| 4 | **Testing** | 2027-02-08 → 2027-02-15 (+7d) | 2027-02-18 → 2027-02-27 (+9d) |  |
| SDR-2-CON-ST-ZA-4310 | Testing for Catch basin pipe | 2027-02-08 → 2027-02-15 (+7d) | 2027-02-18 → 2027-02-27 (+9d) | 51d → 46d |
| 5 | **Backfilling** | 2027-02-20 → 2027-02-28 (+8d) | 2027-03-03 → 2027-03-15 (+12d) |  |
| SDR-2-CON-ST-ZA-4320 | Backfilling for Catch basin | 2027-02-20 → 2027-02-28 (+8d) | 2027-03-03 → 2027-03-15 (+12d) | 51d → 46d |
| 14 | **STORM WATER LINE IN ( PH2-A-MCF0 )** |  | 2027-04-04 → 2027-04-11 (+7d) |  |
| 8 | **Pipes Works** |  | 2026-12-09 → 2026-12-16 (+7d) |  |
| 7 | **bedding Works** | 2026-09-28 → 2026-10-05 (+7d) | 2026-10-21 → 2026-10-28 (+7d) |  |
| SDR-2-CON-ST-ZA-4390 | Sand bedding for GRP Pipes | 2026-09-28 → 2026-10-05 (+7d) | 2026-10-21 → 2026-10-28 (+7d) | 56d → 51d |
| 2 | **Pipes Laying** |  | 2026-10-21 → 2026-10-28 (+7d) |  |
| SDR-2-CON-ST-ZA-4340 | Install ST GRP Pipes |  | 2026-10-21 → 2026-10-28 (+7d) | 56d → 51d |
| 6 | **Testing** | 2026-10-22 → 2026-10-29 (+7d) | 2026-11-15 → 2026-11-22 (+7d) |  |
| SDR-2-CON-ST-ZA-4380 | Testing ST GRP Pipes | 2026-10-22 → 2026-10-29 (+7d) | 2026-11-15 → 2026-11-22 (+7d) | 56d → 51d |
| 3 | **Backfilling** | 2026-11-16 → 2026-11-23 (+7d) | 2026-12-09 → 2026-12-16 (+7d) |  |
| SDR-2-CON-ST-ZA-4350 | Backfilling ST GRP Pipes | 2026-11-16 → 2026-11-23 (+7d) | 2026-12-09 → 2026-12-16 (+7d) | 56d → 51d |
| 4 | **Manholes** |  | 2027-01-04 → 2027-01-11 (+7d) |  |
| 1 | **Excavation** |  | 2026-09-28 → 2026-10-05 (+7d) |  |
| SDR-2-CON-ST-ZA-4360 | Excavation Manholes Section 2 |  | 2026-09-28 → 2026-10-05 (+7d) | 19d → 14d |
| 2 | **bedding Works** | 2026-09-29 → 2026-10-06 (+7d) | 2026-10-22 → 2026-10-29 (+7d) |  |
| SDR-2-CON-ST-ZA-4400 | Sand bedding for Manholes | 2026-09-29 → 2026-10-06 (+7d) | 2026-10-22 → 2026-10-29 (+7d) | 19d → 14d |
| 3 | **Install Manholes** | 2026-10-24 → 2026-10-31 (+7d) | 2026-11-16 → 2026-11-23 (+7d) |  |
| SDR-2-CON-ST-ZA-4410 | Manholes Installation | 2026-10-24 → 2026-10-31 (+7d) | 2026-11-16 → 2026-11-23 (+7d) | 19d → 14d |
| 4 | **Testing** | 2026-11-17 → 2026-11-24 (+7d) | 2026-12-10 → 2026-12-17 (+7d) |  |
| SDR-2-CON-ST-ZA-4420 | Testing for Manholes | 2026-11-17 → 2026-11-24 (+7d) | 2026-12-10 → 2026-12-17 (+7d) | 19d → 14d |
| 5 | **Backfilling** | 2026-12-12 → 2026-12-19 (+7d) | 2027-01-04 → 2027-01-11 (+7d) |  |
| SDR-2-CON-ST-ZA-4430 | Backfilling for Manholes | 2026-12-12 → 2026-12-19 (+7d) | 2027-01-04 → 2027-01-11 (+7d) | 19d → 14d |
| 5 | **Catch basin** |  | 2027-04-04 → 2027-04-11 (+7d) |  |
| 1 | **Excavation** |  | 2026-12-10 → 2026-12-17 (+7d) |  |
| SDR-2-CON-ST-ZA-6470 | Excavation for Catch basin Section 1 |  | 2026-11-16 → 2026-11-23 (+7d) | 28d → 23d |
| SDR-2-CON-ST-ZA-4370 | Excavation for Catch basin Section 2 | 2026-11-17 → 2026-11-24 (+7d) | 2026-12-10 → 2026-12-17 (+7d) | 28d → 23d |
| 2 | **bedding Works** | 2026-12-12 → 2026-12-19 (+7d) | 2027-01-04 → 2027-01-11 (+7d) |  |
| SDR-2-CON-ST-ZA-4440 | Sand Dedding for Catch basin | 2026-12-12 → 2026-12-19 (+7d) | 2027-01-04 → 2027-01-11 (+7d) | 28d → 23d |
| 3 | **Install Catch basin** | 2027-01-05 → 2027-01-12 (+7d) | 2027-01-28 → 2027-02-04 (+7d) |  |
| SDR-2-CON-ST-ZA-4450 | Install Catch basin | 2027-01-05 → 2027-01-12 (+7d) | 2027-01-28 → 2027-02-04 (+7d) | 28d → 23d |
| 4 | **Testing** | 2027-01-30 → 2027-02-06 (+7d) | 2027-02-23 → 2027-03-02 (+7d) |  |
| SDR-2-CON-ST-ZA-4460 | Testing for Catch basin pipe | 2027-01-30 → 2027-02-06 (+7d) | 2027-02-23 → 2027-03-02 (+7d) | 28d → 23d |
| 5 | **Backfilling** | 2027-02-24 → 2027-03-03 (+7d) | 2027-04-04 → 2027-04-11 (+7d) |  |
| SDR-2-CON-ST-ZA-7010 | Backfilling for Catch basin Section 1 | 2027-02-24 → 2027-03-03 (+7d) | 2027-03-17 → 2027-03-24 (+7d) | 28d → 23d |
| SDR-2-CON-ST-ZA-4470 | Backfilling for Catch basin Section 2 | 2027-03-18 → 2027-03-25 (+7d) | 2027-04-04 → 2027-04-11 (+7d) | 28d → 23d |
| 15 | **STORM WATER LINE IN ( PH2-A-MCG0 )** |  | 2027-03-30 → 2027-04-06 (+7d) |  |
| 8 | **Pipes Works** |  | 2027-01-03 → 2027-01-10 (+7d) |  |
| 7 | **bedding Works** | 2026-09-28 → 2026-10-05 (+7d) | 2026-10-21 → 2026-10-28 (+7d) |  |
| SDR-2-CON-ST-ZA-4540 | Sand bedding for GRP Pipes | 2026-09-28 → 2026-10-05 (+7d) | 2026-10-21 → 2026-10-28 (+7d) | 24d → 37d |
| 2 | **Pipes Laying** | 2026-10-22 → 2026-10-29 (+7d) | 2026-11-15 → 2026-11-22 (+7d) |  |
| SDR-2-CON-ST-ZA-4490 | Install ST GRP Pipes | 2026-10-22 → 2026-10-29 (+7d) | 2026-11-15 → 2026-11-22 (+7d) | 24d → 37d |

| ID | Task | Start | Finish | Complete | Total float |
| --- | --- | --- | --- | --- | --- |
| 6 | **Testing** | 2026-11-16 → 2026-11-23 (+7d) | 2026-12-09 → 2026-12-16 (+7d) |  |  |
| SDR-2-CON-ST-ZA-4530 | Testing ST GRP Pipes | 2026-11-16 → 2026-11-23 (+7d) | 2026-12-09 → 2026-12-16 (+7d) |  | 24d → 37d |
| 3 | **Backfilling** | 2026-12-10 → 2026-12-17 (+7d) | 2027-01-03 → 2027-01-10 (+7d) |  |  |
| SDR-2-CON-ST-ZA-4500 | Backfilling ST GRP Pipes | 2026-12-10 → 2026-12-17 (+7d) | 2027-01-03 → 2027-01-10 (+7d) |  | 24d → 37d |
| 4 | **Manholes** |  | 2027-01-04 → 2027-01-11 (+7d) |  |  |
| 1 | **Excavation** |  | 2026-09-28 → 2026-10-05 (+7d) |  |  |
| SDR-2-CON-ST-ZA-4510 | Excavation Manholes Section 2 |  | 2026-09-28 → 2026-10-05 (+7d) |  | 13d → 14d |
| 2 | **bedding Works** | 2026-09-29 → 2026-10-06 (+7d) | 2026-10-22 → 2026-10-29 (+7d) |  |  |
| SDR-2-CON-ST-ZA-4550 | Sand bedding for Manholes | 2026-09-29 → 2026-10-06 (+7d) | 2026-10-22 → 2026-10-29 (+7d) |  | 13d → 14d |
| 3 | **Install Manholes** | 2026-10-24 → 2026-10-31 (+7d) | 2026-11-16 → 2026-11-23 (+7d) |  |  |
| SDR-2-CON-ST-ZA-4560 | Manholes Installation | 2026-10-24 → 2026-10-31 (+7d) | 2026-11-16 → 2026-11-23 (+7d) |  | 13d → 14d |
| 4 | **Testing** | 2026-11-17 → 2026-11-24 (+7d) | 2026-12-10 → 2026-12-17 (+7d) |  |  |
| SDR-2-CON-ST-ZA-4570 | Testing for Manholes | 2026-11-17 → 2026-11-24 (+7d) | 2026-12-10 → 2026-12-17 (+7d) |  | 13d → 14d |
| 5 | **Backfilling** | 2026-12-12 → 2026-12-19 (+7d) | 2027-01-04 → 2027-01-11 (+7d) |  |  |
| SDR-2-CON-ST-ZA-4580 | Backfilling for Manholes | 2026-12-12 → 2026-12-19 (+7d) | 2027-01-04 → 2027-01-11 (+7d) |  | 13d → 14d |
| 5 | **Catch basin** |  | 2027-03-30 → 2027-04-06 (+7d) |  |  |
| 1 | **Excavation** |  | 2026-12-16 → 2026-12-23 (+7d) |  |  |
| SDR-2-CON-ST-ZA-6500 | Excavation for Catch basin Section 1 |  | 2026-11-16 → 2026-11-23 (+7d) |  | 35d → 30d |
| SDR-2-CON-ST-ZA-4520 | Excavation for Catch basin Section 2 | 2026-11-23 → 2026-11-30 (+7d) | 2026-12-16 → 2026-12-23 (+7d) |  | 35d → 30d |
| 2 | **bedding Works** | 2026-12-17 → 2026-12-24 (+7d) | 2027-01-10 → 2027-01-17 (+7d) |  |  |
| SDR-2-CON-ST-ZA-4590 | Sand Dedding for Catch basin | 2026-12-17 → 2026-12-24 (+7d) | 2027-01-10 → 2027-01-17 (+7d) |  | 35d → 30d |
| 3 | **Install Catch basin** | 2027-01-11 → 2027-01-18 (+7d) | 2027-02-03 → 2027-02-10 (+7d) |  |  |
| SDR-2-CON-ST-ZA-4600 | Install Catch basin | 2027-01-11 → 2027-01-18 (+7d) | 2027-02-03 → 2027-02-10 (+7d) |  | 35d → 30d |
| 4 | **Testing** | 2027-02-04 → 2027-02-11 (+7d) | 2027-02-15 → 2027-02-23 (+8d) |  |  |
| SDR-2-CON-ST-ZA-4610 | Testing for Catch basin pipe | 2027-02-04 → 2027-02-11 (+7d) | 2027-02-15 → 2027-02-23 (+8d) |  | 35d → 30d |
| 5 | **Backfilling** | 2027-02-16 → 2027-02-24 (+8d) | 2027-03-30 → 2027-04-06 (+7d) |  |  |
| SDR-2-CON-ST-ZA-7020 | Backfilling for Catch basin Section 1 | 2027-02-16 → 2027-02-24 (+8d) | 2027-03-04 → 2027-03-16 (+12d) |  | 35d → 30d |
| SDR-2-CON-ST-ZA-4620 | Backfilling for Catch basin Section 2 | 2027-03-14 → 2027-03-21 (+7d) | 2027-03-30 → 2027-04-06 (+7d) |  | 32d → 27d |
| 16 | **STORM WATER LINE IN ( PH2-A-MCH0 )** |  | 2027-04-11 → 2027-04-04 (-7d) |  |  |
| 8 | **Pipes Works** |  | 2027-01-03 → 2027-01-10 (+7d) |  |  |
| 7 | **bedding Works** | 2026-09-28 → 2026-10-05 (+7d) | 2026-10-21 → 2026-10-28 (+7d) |  |  |
| SDR-2-CON-ST-ZA-4690 | Sand bedding for GRP Pipes | 2026-09-28 → 2026-10-05 (+7d) | 2026-10-21 → 2026-10-28 (+7d) |  | 4d → 17d |
| 2 | **Pipes Laying** | 2026-10-22 → 2026-10-29 (+7d) | 2026-11-15 → 2026-11-22 (+7d) |  |  |
| SDR-2-CON-ST-ZA-4640 | Install ST GRP Pipes | 2026-10-22 → 2026-10-29 (+7d) | 2026-11-15 → 2026-11-22 (+7d) |  | 4d → 17d |
| 6 | **Testing** | 2026-11-16 → 2026-11-23 (+7d) | 2026-12-09 → 2026-12-16 (+7d) |  |  |
| SDR-2-CON-ST-ZA-4680 | Testing ST GRP Pipes | 2026-11-16 → 2026-11-23 (+7d) | 2026-12-09 → 2026-12-16 (+7d) |  | 4d → 17d |
| 3 | **Backfilling** | 2026-12-10 → 2026-12-17 (+7d) | 2027-01-03 → 2027-01-10 (+7d) |  |  |
| SDR-2-CON-ST-ZA-4650 | Backfilling ST GRP Pipes | 2026-12-10 → 2026-12-17 (+7d) | 2027-01-03 → 2027-01-10 (+7d) |  | 4d → 17d |
| 4 | **Manholes** |  | 2027-01-04 → 2027-01-11 (+7d) |  |  |
| 1 | **Excavation** |  | 2026-09-28 → 2026-10-05 (+7d) |  |  |
| SDR-2-CON-ST-ZA-6350 | Excavation Manholes Section 2 |  | 2026-09-28 → 2026-10-05 (+7d) |  | 24d → 19d |
| 2 | **bedding Works** | 2026-09-29 → 2026-10-06 (+7d) | 2026-10-22 → 2026-10-29 (+7d) |  |  |
| SDR-2-CON-ST-ZA-4700 | Sand bedding for Manholes | 2026-09-29 → 2026-10-06 (+7d) | 2026-10-22 → 2026-10-29 (+7d) |  | 24d → 19d |
| 3 | **Install Manholes** | 2026-10-24 → 2026-10-31 (+7d) | 2026-11-16 → 2026-11-23 (+7d) |  |  |
| SDR-2-CON-ST-ZA-4710 | Manholes Installation | 2026-10-24 → 2026-10-31 (+7d) | 2026-11-16 → 2026-11-23 (+7d) |  | 24d → 19d |
| 4 | **Testing** | 2026-11-17 → 2026-11-24 (+7d) | 2026-12-10 → 2026-12-17 (+7d) |  |  |
| SDR-2-CON-ST-ZA-4720 | Testing for Manholes | 2026-11-17 → 2026-11-24 (+7d) | 2026-12-10 → 2026-12-17 (+7d) |  | 24d → 19d |
| 5 | **Backfilling** | 2026-12-12 → 2026-12-19 (+7d) | 2027-01-04 → 2027-01-11 (+7d) |  |  |
| SDR-2-CON-ST-ZA-4730 | Backfilling for Manholes | 2026-12-12 → 2026-12-19 (+7d) | 2027-01-04 → 2027-01-11 (+7d) |  | 24d → 19d |
| 5 | **Catch basin** |  | 2027-04-11 → 2027-04-04 (-7d) |  |  |
| 1 | **Excavation** |  | 2026-12-10 → 2026-12-17 (+7d) |  |  |
| SDR-2-CON-ST-ZA-6530 | Excavation for Catch basin Section 1 |  | 2026-11-16 → 2026-11-23 (+7d) |  | 35d → 30d |
| SDR-2-CON-ST-ZA-4670 | Excavation for Catch basin Section 2 | 2026-11-17 → 2026-11-24 (+7d) | 2026-12-10 → 2026-12-17 (+7d) |  | 35d → 30d |
| 2 | **bedding Works** | 2026-12-12 → 2026-12-19 (+7d) | 2027-01-04 → 2027-01-11 (+7d) |  |  |
| SDR-2-CON-ST-ZA-4740 | Sand Dedding for Catch basin | 2026-12-12 → 2026-12-19 (+7d) | 2027-01-04 → 2027-01-11 (+7d) |  | 35d → 30d |
| 3 | **Install Catch basin** | 2027-01-11 → 2027-01-18 (+7d) | 2027-02-03 → 2027-02-10 (+7d) |  |  |
| SDR-2-CON-ST-ZA-4750 | Install Catch basin | 2027-01-11 → 2027-01-18 (+7d) | 2027-02-03 → 2027-02-10 (+7d) |  | 35d → 30d |
| 4 | **Testing** | 2027-02-04 → 2027-02-11 (+7d) | 2027-02-15 → 2027-02-23 (+8d) |  |  |
| SDR-2-CON-ST-ZA-4760 | Testing for Catch basin pipe | 2027-02-04 → 2027-02-11 (+7d) | 2027-02-15 → 2027-02-23 (+8d) |  | 35d → 30d |
| 5 | **Backfilling** | 2027-02-16 → 2027-02-24 (+8d) | 2027-04-11 → 2027-04-04 (-7d) |  |  |
| SDR-2-CON-ST-ZA-7030 | Backfilling for Catch basin Section 1 | 2027-02-16 → 2027-02-24 (+8d) | 2027-03-04 → 2027-03-16 (+12d) |  | 35d → 30d |
| SDR-2-CON-ST-ZA-4770 | Backfilling for Catch basin Section 2 | 2027-03-25 → 2027-03-18 (-7d) | 2027-04-11 → 2027-04-04 (-7d) |  | 22d → 29d |
| 1 | **STORM WATER LINE IN ( PH2-A-MCA0 )** |  | 2027-03-29 → 2027-04-05 (+7d) |  |  |
| 8 | **Pipes Works** |  | 2027-01-05 → 2027-01-09 (+4d) |  |  |
| 7 | **bedding Works** | 2026-09-28 → 2026-10-01 (+3d) | 2026-10-21 → 2026-10-28 (+7d) |  |  |
| SDR-2-CON-ST-ZA-4840 | Sand bedding for GRP Pipes | 2026-09-28 → 2026-10-01 A (+3d) | 2026-10-21 → 2026-10-28 (+7d) | 0% → 25% | 23d → 21d |
| 2 | **Pipes Laying** | 2026-10-15 → 2026-10-19 (+4d) | 2026-11-08 → 2026-11-11 (+3d) |  |  |
| SDR-2-CON-ST-ZA-4790 | Install ST GRP Pipes | 2026-10-15 → 2026-10-19 A (+4d) | 2026-11-08 → 2026-11-11 (+3d) |  | 23d → 21d |
| 6 | **Testing** | 2026-11-09 → 2026-11-12 (+3d) | 2026-12-02 → 2026-12-06 (+4d) |  |  |
| SDR-2-CON-ST-ZA-4830 | Testing ST GRP Pipes | 2026-11-09 → 2026-11-12 (+3d) | 2026-12-02 → 2026-12-06 (+4d) |  | 23d → 21d |

| ID | Task | Start | Finish | Total float |
| --- | --- | --- | --- | --- |
| 3 | **Backfilling** | 2026-12-13 → 2026-12-16 (+3d) | 2027-01-05 → 2027-01-09 (+4d) |  |
| SDR-2-CON-ST-ZA-4800 | Backfilling ST GRP Pipes | 2026-12-13 → 2026-12-16 (+3d) | 2027-01-05 → 2027-01-09 (+4d) | 23d → 21d |
| 4 | **Manholes** |  | 2027-01-04 → 2027-01-11 (+7d) |  |
| 1 | **Excavation** |  | 2026-09-28 → 2026-10-05 (+7d) |  |
| SDR-2-CON-ST-ZA-4810 | Excavation Manholes Section 2 |  | 2026-09-28 → 2026-10-05 (+7d) | 13d → 14d |
| 2 | **bedding Works** | 2026-09-29 → 2026-10-06 (+7d) | 2026-10-22 → 2026-10-29 (+7d) |  |
| SDR-2-CON-ST-ZA-4850 | Sand bedding for Manholes | 2026-09-29 → 2026-10-06 (+7d) | 2026-10-22 → 2026-10-29 (+7d) | 13d → 14d |
| 3 | **Install Manholes** | 2026-10-24 → 2026-10-31 (+7d) | 2026-11-16 → 2026-11-23 (+7d) |  |
| SDR-2-CON-ST-ZA-4860 | Manholes Installation | 2026-10-24 → 2026-10-31 (+7d) | 2026-11-16 → 2026-11-23 (+7d) | 13d → 14d |
| 4 | **Testing** | 2026-11-17 → 2026-11-24 (+7d) | 2026-12-10 → 2026-12-17 (+7d) |  |
| SDR-2-CON-ST-ZA-4870 | Testing for Manholes | 2026-11-17 → 2026-11-24 (+7d) | 2026-12-10 → 2026-12-17 (+7d) | 13d → 14d |
| 5 | **Backfilling** | 2026-12-12 → 2026-12-19 (+7d) | 2027-01-04 → 2027-01-11 (+7d) |  |
| SDR-2-CON-ST-ZA-4880 | Backfilling for Manholes | 2026-12-12 → 2026-12-19 (+7d) | 2027-01-04 → 2027-01-11 (+7d) | 13d → 14d |
| 5 | **Catch basin** |  | 2027-03-29 → 2027-04-05 (+7d) |  |
| 1 | **Excavation** |  | 2026-12-17 → 2026-12-24 (+7d) |  |
| SDR-2-CON-ST-ZA-6560 | Excavation for Catch basin Section 1 |  | 2026-11-16 → 2026-11-23 (+7d) | 29d → 24d |
| SDR-2-CON-ST-ZA-4820 | Excavation for Catch basin Section 2 | 2026-11-24 → 2026-12-01 (+7d) | 2026-12-17 → 2026-12-24 (+7d) | 32d → 29.7d |
| 2 | **bedding Works** | 2026-12-19 → 2026-12-26 (+7d) | 2027-01-11 → 2027-01-18 (+7d) |  |
| SDR-2-CON-ST-ZA-4890 | Sand Dedding for Catch basin | 2026-12-19 → 2026-12-26 (+7d) | 2027-01-11 → 2027-01-18 (+7d) | 32d → 29.7d |
| 3 | **Install Catch basin** | 2027-01-12 → 2027-01-19 (+7d) | 2027-02-04 → 2027-02-11 (+7d) |  |
| SDR-2-CON-ST-ZA-4900 | Install Catch basin | 2027-01-12 → 2027-01-19 (+7d) | 2027-02-04 → 2027-02-11 (+7d) | 32d → 29.7d |
| 4 | **Testing** | 2027-02-06 → 2027-02-13 (+7d) | 2027-02-18 → 2027-02-27 (+9d) |  |
| SDR-2-CON-ST-ZA-4910 | Testing for Catch basin pipe | 2027-02-06 → 2027-02-13 (+7d) | 2027-02-18 → 2027-02-27 (+9d) | 32d → 29.7d |
| 5 | **Backfilling** | 2027-02-20 → 2027-02-28 (+8d) | 2027-03-29 → 2027-04-05 (+7d) |  |
| SDR-2-CON-ST-ZA-7040 | Backfilling for Catch basin Section 1 | 2027-02-20 → 2027-02-28 (+8d) | 2027-03-08 → 2027-03-20 (+12d) | 32d → 29.7d |
| SDR-2-CON-ST-ZA-4920 | Backfilling for Catch basin Section 2 | 2027-03-14 → 2027-03-21 (+7d) | 2027-03-29 → 2027-04-05 (+7d) | 32d → 29.7d |
| 17 | **STORM WATER LINE IN From MH - A2 / 2 TO STA-A2/10** |  | 2027-04-20 → 2027-04-27 (+7d) |  |
| 8 | **Pipes Works** |  | 2027-01-03 → 2027-01-10 (+7d) |  |
| 7 | **bedding Works** | 2026-09-28 → 2026-10-05 (+7d) | 2026-10-21 → 2026-10-28 (+7d) |  |
| SDR-2-CON-ST-ZA-4990 | Sand bedding for GRP Pipes | 2026-09-28 → 2026-10-05 (+7d) | 2026-10-21 → 2026-10-28 (+7d) | 25d → 20d |
| 2 | **Pipes Laying** | 2026-10-22 → 2026-10-29 (+7d) | 2026-11-15 → 2026-11-22 (+7d) |  |
| SDR-2-CON-ST-ZA-4940 | Install ST GRP Pipes | 2026-10-22 → 2026-10-29 (+7d) | 2026-11-15 → 2026-11-22 (+7d) | 25d → 20d |
| 6 | **Testing** | 2026-11-16 → 2026-11-23 (+7d) | 2026-12-09 → 2026-12-16 (+7d) |  |
| SDR-2-CON-ST-ZA-4980 | Testing ST GRP Pipes | 2026-11-16 → 2026-11-23 (+7d) | 2026-12-09 → 2026-12-16 (+7d) | 25d → 20d |
| 3 | **Backfilling** | 2026-12-10 → 2026-12-17 (+7d) | 2027-01-03 → 2027-01-10 (+7d) |  |
| SDR-2-CON-ST-ZA-4950 | Backfilling ST GRP Pipes | 2026-12-10 → 2026-12-17 (+7d) | 2027-01-03 → 2027-01-10 (+7d) | 25d → 20d |
| 4 | **Manholes** |  | 2027-01-04 → 2027-01-11 (+7d) |  |
| 1 | **Excavation** |  | 2026-09-28 → 2026-10-05 (+7d) |  |
| SDR-2-CON-ST-ZA-4960 | Excavation Manholes Section 2 |  | 2026-09-28 → 2026-10-05 (+7d) | 5d → 0d |
| 2 | **bedding Works** | 2026-09-29 → 2026-10-06 (+7d) | 2026-10-22 → 2026-10-29 (+7d) |  |
| SDR-2-CON-ST-ZA-5000 | Sand bedding for Manholes | 2026-09-29 → 2026-10-06 (+7d) | 2026-10-22 → 2026-10-29 (+7d) | 5d → 0d |
| 3 | **Install Manholes** | 2026-10-24 → 2026-10-31 (+7d) | 2026-11-16 → 2026-11-23 (+7d) |  |
| SDR-2-CON-ST-ZA-5010 | Manholes Installation | 2026-10-24 → 2026-10-31 (+7d) | 2026-11-16 → 2026-11-23 (+7d) | 5d → 0d |
| 4 | **Testing** | 2026-11-17 → 2026-11-24 (+7d) | 2026-12-10 → 2026-12-17 (+7d) |  |
| SDR-2-CON-ST-ZA-5020 | Testing for Manholes | 2026-11-17 → 2026-11-24 (+7d) | 2026-12-10 → 2026-12-17 (+7d) | 24d → 19d |
| 5 | **Backfilling** | 2026-12-12 → 2026-12-19 (+7d) | 2027-01-04 → 2027-01-11 (+7d) |  |
| SDR-2-CON-ST-ZA-5030 | Backfilling for Manholes | 2026-12-12 → 2026-12-19 (+7d) | 2027-01-04 → 2027-01-11 (+7d) | 24d → 19d |
| 5 | **Catch basin** | 2026-11-17 → 2026-11-24 (+7d) | 2027-04-20 → 2027-04-27 (+7d) |  |
| 1 | **Excavation** | 2026-11-17 → 2026-11-24 (+7d) | 2027-01-10 → 2027-01-17 (+7d) |  |
| SDR-2-CON-ST-ZA-6590 | Excavation for Catch basin Section 1 | 2026-11-17 → 2026-11-24 (+7d) | 2026-12-10 → 2026-12-17 (+7d) | 5d → 0d |
| SDR-2-CON-ST-ZA-4970 | Excavation for Catch basin Section 2 | 2026-12-17 → 2026-12-24 (+7d) | 2027-01-10 → 2027-01-17 (+7d) | 27d → 21d |
| 2 | **bedding Works** | 2027-01-11 → 2027-01-18 (+7d) | 2027-02-03 → 2027-02-10 (+7d) |  |
| SDR-2-CON-ST-ZA-5040 | Sand Dedding for Catch basin | 2027-01-11 → 2027-01-18 (+7d) | 2027-02-03 → 2027-02-10 (+7d) | 27d → 21d |
| 3 | **Install Catch basin** | 2027-02-04 → 2027-02-11 (+7d) | 2027-03-01 → 2027-03-08 (+7d) |  |
| SDR-2-CON-ST-ZA-5050 | Install Catch basin | 2027-02-04 → 2027-02-11 (+7d) | 2027-03-01 → 2027-03-08 (+7d) | 27d → 21d |
| 4 | **Testing** | 2027-03-02 → 2027-03-14 (+12d) | 2027-03-20 → 2027-03-27 (+7d) |  |
| SDR-2-CON-ST-ZA-5060 | Testing for Catch basin pipe | 2027-03-02 → 2027-03-14 (+12d) | 2027-03-20 → 2027-03-27 (+7d) | 27d → 21d |
| 5 | **Backfilling** | 2027-03-21 → 2027-03-28 (+7d) | 2027-04-20 → 2027-04-27 (+7d) |  |
| SDR-2-CON-ST-ZA-7050 | Backfilling for Catch basin Section 1 | 2027-03-21 → 2027-03-28 (+7d) | 2027-04-06 → 2027-04-13 (+7d) | 27d → 21d |
| SDR-2-CON-ST-ZA-5070 | Backfilling for Catch basin Section 2 | 2027-04-07 → 2027-04-14 (+7d) | 2027-04-20 → 2027-04-27 (+7d) | 27d → 21d |
| 18 | **STORM WATER LINE From STA-A2/10 TO STA-A2/1** |  | 2027-05-01 → 2027-05-08 (+7d) |  |
| 8 | **Pipes Works** |  | 2027-01-03 → 2027-01-10 (+7d) |  |
| 7 | **bedding Works** | 2026-09-28 → 2026-10-05 (+7d) | 2026-10-21 → 2026-10-28 (+7d) |  |
| SDR-2-CON-ST-ZA-5140 | Sand bedding for GRP Pipes | 2026-09-28 → 2026-10-05 (+7d) | 2026-10-21 → 2026-10-28 (+7d) | 4d → 9d |
| 2 | **Pipes Laying** | 2026-10-22 → 2026-10-29 (+7d) | 2026-11-15 → 2026-11-22 (+7d) |  |
| SDR-2-CON-ST-ZA-5090 | Install ST GRP Pipes | 2026-10-22 → 2026-10-29 (+7d) | 2026-11-15 → 2026-11-22 (+7d) | 4d → 9d |
| 6 | **Testing** | 2026-11-16 → 2026-11-23 (+7d) | 2026-12-09 → 2026-12-16 (+7d) |  |
| SDR-2-CON-ST-ZA-5130 | Testing ST GRP Pipes | 2026-11-16 → 2026-11-23 (+7d) | 2026-12-09 → 2026-12-16 (+7d) | 4d → 9d |
| 3 | **Backfilling** | 2026-12-10 → 2026-12-17 (+7d) | 2027-01-03 → 2027-01-10 (+7d) |  |
| SDR-2-CON-ST-ZA-5100 | Backfilling ST GRP Pipes | 2026-12-10 → 2026-12-17 (+7d) | 2027-01-03 → 2027-01-10 (+7d) | 4d → 9d |

| ID | Task | Start | Finish | Total float |
| --- | --- | --- | --- | --- |
| 4 | **Manholes** | 2026-09-28 → 2026-10-05 (+7d) | 2027-02-21 → 2027-03-01 (+8d) |  |
| 1 | **Excavation** | 2026-09-28 → 2026-10-05 (+7d) | 2026-11-15 → 2026-11-22 (+7d) |  |
| SDR-2-CON-ST-ZA-6610 | Excavation Manholes Section 1 | 2026-09-28 → 2026-10-05 (+7d) | 2026-10-21 → 2026-10-28 (+7d) | 9d → 4d |
| SDR-2-CON-ST-ZA-5110 | Excavation Manholes Section 2 | 2026-10-22 → 2026-10-29 (+7d) | 2026-11-15 → 2026-11-22 (+7d) | 9d → 4d |
| 2 | **bedding Works** | 2026-11-16 → 2026-11-23 (+7d) | 2026-12-09 → 2026-12-16 (+7d) |  |
| SDR-2-CON-ST-ZA-5150 | Sand bedding for Manholes | 2026-11-16 → 2026-11-23 (+7d) | 2026-12-09 → 2026-12-16 (+7d) | 9d → 4d |
| 3 | **Install Manholes** | 2026-12-10 → 2026-12-17 (+7d) | 2027-01-03 → 2027-01-10 (+7d) |  |
| SDR-2-CON-ST-ZA-5160 | Manholes Installation | 2026-12-10 → 2026-12-17 (+7d) | 2027-01-03 → 2027-01-10 (+7d) | 9d → 4d |
| 4 | **Testing** | 2027-01-04 → 2027-01-11 (+7d) | 2027-01-27 → 2027-02-03 (+7d) |  |
| SDR-2-CON-ST-ZA-5170 | Testing for Manholes | 2027-01-04 → 2027-01-11 (+7d) | 2027-01-27 → 2027-02-03 (+7d) | 9d → 4d |
| 5 | **Backfilling** | 2027-01-28 → 2027-02-04 (+7d) | 2027-02-21 → 2027-03-01 (+8d) |  |
| SDR-2-CON-ST-ZA-5180 | Backfilling for Manholes | 2027-01-28 → 2027-02-04 (+7d) | 2027-02-21 → 2027-03-01 (+8d) | 9d → 4d |
| 5 | **Catch basin** | 2026-12-12 → 2026-12-19 (+7d) | 2027-05-01 → 2027-05-08 (+7d) |  |
| 1 | **Excavation** | 2026-12-12 → 2026-12-19 (+7d) | 2027-01-28 → 2027-02-04 (+7d) |  |
| SDR-2-CON-ST-ZA-6620 | Excavation for Catch basin Section 1 | 2026-12-12 → 2026-12-19 (+7d) | 2027-01-04 → 2027-01-11 (+7d) | 5d → 0d |
| SDR-2-CON-ST-ZA-5120 | Excavation for Catch basin Section 2 | 2027-01-05 → 2027-01-12 (+7d) | 2027-01-28 → 2027-02-04 (+7d) | 5d → 0d |
| 2 | **bedding Works** | 2027-01-30 → 2027-02-06 (+7d) | 2027-02-23 → 2027-03-02 (+7d) |  |
| SDR-2-CON-ST-ZA-5190 | Sand Dedding for Catch basin | 2027-01-30 → 2027-02-06 (+7d) | 2027-02-23 → 2027-03-02 (+7d) | 5d → 0d |
| 3 | **Install Catch basin** | 2027-02-24 → 2027-03-03 (+7d) | 2027-03-24 → 2027-03-31 (+7d) |  |
| SDR-2-CON-ST-ZA-5200 | Install Catch basin | 2027-02-24 → 2027-03-03 (+7d) | 2027-03-24 → 2027-03-31 (+7d) | 5d → 0d |
| 4 | **Testing** | 2027-03-25 → 2027-04-01 (+7d) | 2027-04-07 → 2027-04-14 (+7d) |  |
| SDR-2-CON-ST-ZA-5210 | Testing for Catch basin pipe | 2027-03-25 → 2027-04-01 (+7d) | 2027-04-07 → 2027-04-14 (+7d) | 5d → 0d |
| 5 | **Backfilling** | 2027-04-08 → 2027-04-15 (+7d) | 2027-05-01 → 2027-05-08 (+7d) |  |
| SDR-2-CON-ST-ZA-7060 | Backfilling for Catch basin Section 1 | 2027-04-08 → 2027-04-15 (+7d) | 2027-04-22 → 2027-04-29 (+7d) | 5d → 0d |
| SDR-2-CON-ST-ZA-5220 | Backfilling for Catch basin Section 2 | 2027-04-15 → 2027-04-22 (+7d) | 2027-05-01 → 2027-05-08 (+7d) | 5d → 0d |
| 19 | **STORM WATER LINE From IP A7 To Pond A** |  | 2027-04-07 → 2027-04-14 (+7d) |  |
| 8 | **Pipes Works** |  | 2027-01-04 → 2027-01-11 (+7d) |  |
| 1 | **Excavation** |  | 2026-09-28 → 2026-10-05 (+7d) |  |
| SDR-2-CON-ST-ZA-5830 | Excavation for GRP Pipes Section 2 |  | 2026-09-28 → 2026-10-05 (+7d) | 30d → 25d |
| SDR-2-CON-ST-ZA-6630 | Excavation for GRP Pipes Section 1 |  | 2026-09-28 → 2026-10-05 (+7d) | 25d → 20d |
| 7 | **bedding Works** | 2026-09-29 → 2026-10-06 (+7d) | 2026-10-22 → 2026-10-29 (+7d) |  |
| SDR-2-CON-ST-ZA-5890 | Sand bedding for GRP Pipes | 2026-09-29 → 2026-10-06 (+7d) | 2026-10-22 → 2026-10-29 (+7d) | 30d → 25d |
| 2 | **Pipes Laying** | 2026-10-24 → 2026-10-31 (+7d) | 2026-11-16 → 2026-11-23 (+7d) |  |
| SDR-2-CON-ST-ZA-5840 | Install ST GRP Pipes | 2026-10-24 → 2026-10-31 (+7d) | 2026-11-16 → 2026-11-23 (+7d) | 30d → 25d |
| 6 | **Testing** | 2026-11-17 → 2026-11-24 (+7d) | 2026-12-10 → 2026-12-17 (+7d) |  |
| SDR-2-CON-ST-ZA-5880 | Testing ST GRP Pipes | 2026-11-17 → 2026-11-24 (+7d) | 2026-12-10 → 2026-12-17 (+7d) | 30d → 25d |
| 3 | **Backfilling** | 2026-12-12 → 2026-12-19 (+7d) | 2027-01-04 → 2027-01-11 (+7d) |  |
| SDR-2-CON-ST-ZA-5850 | Backfilling ST GRP Pipes | 2026-12-12 → 2026-12-19 (+7d) | 2027-01-04 → 2027-01-11 (+7d) | 30d → 25d |
| 4 | **Manholes** | 2026-09-28 → 2026-10-05 (+7d) | 2027-02-25 → 2027-03-04 (+7d) |  |
| 1 | **Excavation** | 2026-09-28 → 2026-10-05 (+7d) | 2026-11-18 → 2026-11-25 (+7d) |  |
| SDR-2-CON-ST-ZA-6640 | Excavation Manholes Section 1 | 2026-09-28 → 2026-10-05 (+7d) | 2026-10-21 → 2026-10-28 (+7d) | 25d → 20d |
| SDR-2-CON-ST-ZA-5860 | Excavation Manholes Section 2 | 2026-10-26 → 2026-11-02 (+7d) | 2026-11-18 → 2026-11-25 (+7d) | 25d → 20d |
| 2 | **bedding Works** | 2026-11-19 → 2026-11-26 (+7d) | 2026-12-13 → 2026-12-20 (+7d) |  |
| SDR-2-CON-ST-ZA-5900 | Sand bedding for Manholes | 2026-11-19 → 2026-11-26 (+7d) | 2026-12-13 → 2026-12-20 (+7d) | 25d → 20d |
| 3 | **Install Manholes** | 2026-12-14 → 2026-12-21 (+7d) | 2027-01-06 → 2027-01-13 (+7d) |  |
| SDR-2-CON-ST-ZA-5910 | Manholes Installation | 2026-12-14 → 2026-12-21 (+7d) | 2027-01-06 → 2027-01-13 (+7d) | 25d → 20d |
| 4 | **Testing** | 2027-01-07 → 2027-01-14 (+7d) | 2027-01-31 → 2027-02-07 (+7d) |  |
| SDR-2-CON-ST-ZA-5920 | Testing for Manholes | 2027-01-07 → 2027-01-14 (+7d) | 2027-01-31 → 2027-02-07 (+7d) | 25d → 20d |
| 5 | **Backfilling** | 2027-02-01 → 2027-02-08 (+7d) | 2027-02-25 → 2027-03-04 (+7d) |  |
| SDR-2-CON-ST-ZA-5930 | Backfilling for Manholes | 2027-02-01 → 2027-02-08 (+7d) | 2027-02-25 → 2027-03-04 (+7d) | 25d → 20d |
| 5 | **Catch basin** | 2026-11-17 → 2026-11-24 (+7d) | 2027-04-07 → 2027-04-14 (+7d) |  |
| 1 | **Excavation** | 2026-11-17 → 2026-11-24 (+7d) | 2027-01-04 → 2027-01-11 (+7d) |  |
| SDR-2-CON-ST-ZA-6650 | Excavation for Catch basin Section 1 | 2026-11-17 → 2026-11-24 (+7d) | 2026-12-10 → 2026-12-17 (+7d) | 29d → 24d |
| SDR-2-CON-ST-ZA-5870 | Excavation for Catch basin Section 2 | 2026-12-12 → 2026-12-19 (+7d) | 2027-01-04 → 2027-01-11 (+7d) | 29d → 24d |
| 2 | **bedding Works** | 2027-01-05 → 2027-01-12 (+7d) | 2027-01-28 → 2027-02-04 (+7d) |  |
| SDR-2-CON-ST-ZA-5940 | Sand Dedding for Catch basin | 2027-01-05 → 2027-01-12 (+7d) | 2027-01-28 → 2027-02-04 (+7d) | 29d → 24d |
| 3 | **Install Catch basin** | 2027-01-30 → 2027-02-06 (+7d) | 2027-02-23 → 2027-03-02 (+7d) |  |
| SDR-2-CON-ST-ZA-5950 | Install Catch basin | 2027-01-30 → 2027-02-06 (+7d) | 2027-02-23 → 2027-03-02 (+7d) | 29d → 24d |
| 4 | **Testing** | 2027-02-24 → 2027-03-03 (+7d) | 2027-03-04 → 2027-03-16 (+12d) |  |
| SDR-2-CON-ST-ZA-5960 | Testing for Catch basin pipe | 2027-02-24 → 2027-03-03 (+7d) | 2027-03-04 → 2027-03-16 (+12d) | 29d → 24d |
| 5 | **Backfilling** | 2027-03-15 → 2027-03-22 (+7d) | 2027-04-07 → 2027-04-14 (+7d) |  |
| SDR-2-CON-ST-ZA-5970 | Backfilling for Catch basin | 2027-03-15 → 2027-03-22 (+7d) | 2027-04-07 → 2027-04-14 (+7d) | 25d → 20d |
| 2 | **Concrete Box culverts** |  | 2026-11-24 → 2026-12-01 (+7d) |  |
| 6 | **For Pond A** |  | 2026-10-21 → 2026-10-28 (+7d) |  |
| 3 | **Plain Concrete** | 2026-09-28 → 2026-10-05 (+7d) | 2026-10-04 → 2026-10-11 (+7d) |  |
| SDR-2-CON-ST-ZA-3290 | Plain Concrete for box culvert | 2026-09-28 → 2026-10-05 (+7d) | 2026-10-04 → 2026-10-11 (+7d) | 26d → 27d |
| 4 | **Steel Reinforcement** | 2026-10-05 → 2026-10-12 (+7d) | 2026-10-13 → 2026-10-20 (+7d) |  |
| SDR-2-CON-ST-ZA-3300 | Steel Reinforcement for box culverts | 2026-10-05 → 2026-10-12 (+7d) | 2026-10-13 → 2026-10-20 (+7d) | 26d → 27d |
| 5 | **Reinforced Concrete** | 2026-10-14 → 2026-10-21 (+7d) | 2026-10-21 → 2026-10-28 (+7d) |  |
| SDR-2-CON-ST-ZA-3310 | Reinforced Concrete for box culvert | 2026-10-14 → 2026-10-21 (+7d) | 2026-10-21 → 2026-10-28 (+7d) | 26d → 27d |

| ID | Task | Start | Finish | Total float |
| --- | --- | --- | --- | --- |
| 7 | **For Pond B** |  | 2026-10-31 → 2026-11-07 (+7d) |  |
| 2 | **Backfilling with common / suitable excavated material** | 2026-09-28 → 2026-10-05 (+7d) | 2026-10-06 → 2026-10-13 (+7d) |  |
| SDR-2-CON-ST-ZA-6260 | Backfilling with common / suitable excavated material or with suitable imported material | 2026-09-28 → 2026-10-05 (+7d) | 2026-10-06 → 2026-10-13 (+7d) | 16d → 17d |
| 3 | **Plain Concrete** | 2026-10-07 → 2026-10-14 (+7d) | 2026-10-13 → 2026-10-20 (+7d) |  |
| SDR-2-CON-ST-ZA-6270 | Plain Concrete for box culvert | 2026-10-07 → 2026-10-14 (+7d) | 2026-10-13 → 2026-10-20 (+7d) | 16d → 17d |
| 4 | **Steel Reinforcement** | 2026-10-14 → 2026-10-21 (+7d) | 2026-10-22 → 2026-10-29 (+7d) |  |
| SDR-2-CON-ST-ZA-6280 | Steel Reinforcement for box culverts | 2026-10-14 → 2026-10-21 (+7d) | 2026-10-22 → 2026-10-29 (+7d) | 16d → 17d |
| 5 | **Reinforced Concrete** | 2026-10-24 → 2026-10-31 (+7d) | 2026-10-31 → 2026-11-07 (+7d) |  |
| SDR-2-CON-ST-ZA-6290 | Reinforced Concrete for box culvert | 2026-10-24 → 2026-10-31 (+7d) | 2026-10-31 → 2026-11-07 (+7d) | 16d → 17d |
| 8 | **For Pond C** | 2026-10-01 → 2026-10-08 (+7d) | 2026-11-24 → 2026-12-01 (+7d) |  |
| 1 | **Excavation** | 2026-10-01 → 2026-10-08 (+7d) | 2026-10-12 → 2026-10-19 (+7d) |  |
| SDR-2-CON-ST-ZA-6300 | Excavation for Box Culvert. | 2026-10-01 → 2026-10-08 (+7d) | 2026-10-12 → 2026-10-19 (+7d) | 8d → 9d |
| 2 | **Backfilling with common / suitable excavated material** | 2026-10-13 → 2026-10-20 (+7d) | 2026-10-21 → 2026-10-28 (+7d) |  |
| SDR-2-CON-ST-ZA-6310 | Backfilling with common / suitable excavated material or with suitable imported material | 2026-10-13 → 2026-10-20 (+7d) | 2026-10-21 → 2026-10-28 (+7d) | 8d → 9d |
| 3 | **Plain Concrete** | 2026-10-22 → 2026-10-29 (+7d) | 2026-10-28 → 2026-11-04 (+7d) |  |
| SDR-2-CON-ST-ZA-6320 | Plain Concrete for box culvert | 2026-10-22 → 2026-10-29 (+7d) | 2026-10-28 → 2026-11-04 (+7d) | 8d → 9d |
| 4 | **Steel Reinforcement** | 2026-10-29 → 2026-11-05 (+7d) | 2026-11-07 → 2026-11-14 (+7d) |  |
| SDR-2-CON-ST-ZA-6330 | Steel Reinforcement for box culverts | 2026-10-29 → 2026-11-05 (+7d) | 2026-11-07 → 2026-11-14 (+7d) | 8d → 9d |
| 5 | **Reinforced Concrete** | 2026-11-17 → 2026-11-24 (+7d) | 2026-11-24 → 2026-12-01 (+7d) |  |
| SDR-2-CON-ST-ZA-6340 | Reinforced Concrete for box culvert | 2026-11-17 → 2026-11-24 (+7d) | 2026-11-24 → 2026-12-01 (+7d) | 8d → 9d |
| 3 | **Drainage works for ponds and open canals** |  | 2027-03-23 → 2027-03-30 (+7d) |  |
| 7 | **Pond A** |  | 2026-12-16 → 2026-12-23 (+7d) |  |
| 3 | **Sand lining for pond bed** |  | 2026-10-28 → 2026-11-04 (+7d) |  |
| SDR-2-CON-ST-ZA-6690 | Sand lining for pond bed Section 1 & Section 2 |  | 2026-09-30 → 2026-10-07 (+7d) | 60d → 56d |
| SDR-2-CON-ST-ZA-6150 | Sand lining for pond bed Section 3 & Section 4 | 2026-10-05 → 2026-10-12 (+7d) | 2026-10-28 → 2026-11-04 (+7d) | 60d → 56d |
| 6 | **Pipe Encasements,** | 2026-10-29 → 2026-11-05 (+7d) | 2026-11-22 → 2026-11-29 (+7d) |  |
| SDR-2-CON-ST-ZA-6180 | Pipe encasement | 2026-10-29 → 2026-11-05 (+7d) | 2026-11-22 → 2026-11-29 (+7d) | 60d → 56d |
| 5 | **Concrete Outfalls** | 2026-11-23 → 2026-11-30 (+7d) | 2026-12-16 → 2026-12-23 (+7d) |  |
| SDR-2-CON-ST-ZA-6170 | Concrete Outfall structure. | 2026-11-23 → 2026-11-30 (+7d) | 2026-12-16 → 2026-12-23 (+7d) | 60d → 56d |
| 8 | **Pond B** |  | 2027-03-23 → 2027-03-30 (+7d) |  |
| 3 | **Sand lining for pond bed** |  | 2026-12-16 → 2026-12-23 (+7d) |  |
| SDR-2-CON-ST-ZA-6720 | Sand lining for pond bed Section 1 |  | 2026-11-24 → 2026-12-01 (+7d) | 24d → 19d |
| SDR-2-CON-ST-ZA-6210 | Sand lining for pond bed Section 2 | 2026-11-25 → 2026-12-02 (+7d) | 2026-12-16 → 2026-12-23 (+7d) | 24d → 19d |
| 6 | **Pipe Encasements,** | 2026-12-17 → 2026-12-24 (+7d) | 2027-01-10 → 2027-01-17 (+7d) |  |
| SDR-2-CON-ST-ZA-6240 | Pipe encasement | 2026-12-17 → 2026-12-24 (+7d) | 2027-01-10 → 2027-01-17 (+7d) | 24d → 19d |
| 5 | **Concrete Outfalls** | 2027-01-11 → 2027-01-18 (+7d) | 2027-02-03 → 2027-02-10 (+7d) |  |
| SDR-2-CON-ST-ZA-6230 | Concrete Outfall structure. | 2027-01-11 → 2027-01-18 (+7d) | 2027-02-03 → 2027-02-10 (+7d) | 24d → 19d |
| 4 | **Loose Riprap** | 2027-02-23 → 2027-03-02 (+7d) | 2027-03-23 → 2027-03-30 (+7d) |  |
| SDR-2-CON-ST-ZA-6220 | Loose Riprap work | 2027-02-23 → 2027-03-02 (+7d) | 2027-03-23 → 2027-03-30 (+7d) | 9d → 4d |
| 9 | **Pond C** |  | 2027-02-23 → 2027-03-02 (+7d) |  |
| 1 | **Excavation** |  | 2026-10-25 → 2026-11-01 (+7d) |  |
| SDR-2-CON-ST-ZA-6740 | Excavation for cutting material. Section 2 |  | 2026-09-30 → 2026-10-07 (+7d) | 2d → 8d |
| SDR-2-CON-ST-ZA-3320 | Excavation for cutting material. Section 3 | 2026-10-01 → 2026-10-08 (+7d) | 2026-10-25 → 2026-11-01 (+7d) | 2d → 8d |
| 3 | **Sand lining for pond bed** | 2026-10-26 → 2026-11-02 (+7d) | 2026-12-10 → 2026-12-17 (+7d) |  |
| SDR-2-CON-ST-ZA-6750 | Sand lining for pond bed Section 1 | 2026-10-26 → 2026-11-02 (+7d) | 2026-11-17 → 2026-11-24 (+7d) | 2d → 8d |
| SDR-2-CON-ST-ZA-3340 | Sand lining for pond bed Section 2 &Section 3 | 2026-11-18 → 2026-11-25 (+7d) | 2026-12-10 → 2026-12-17 (+7d) | 2d → 8d |
| 6 | **Pipe Encasements,** | 2026-12-12 → 2026-12-19 (+7d) | 2027-01-04 → 2027-01-11 (+7d) |  |
| SDR-2-CON-ST-ZA-3370 | Pipe encasement | 2026-12-12 → 2026-12-19 (+7d) | 2027-01-04 → 2027-01-11 (+7d) | 2d → 8d |
| 5 | **Concrete Outfalls** | 2027-01-05 → 2027-01-12 (+7d) | 2027-01-28 → 2027-02-04 (+7d) |  |
| SDR-2-CON-ST-ZA-3360 | Concrete Outfall structure. | 2027-01-05 → 2027-01-12 (+7d) | 2027-01-28 → 2027-02-04 (+7d) | 2d → 8d |
| 4 | **Loose Riprap** | 2027-01-30 → 2027-02-06 (+7d) | 2027-02-23 → 2027-03-02 (+7d) |  |
| SDR-2-CON-ST-ZA-3350 | Loose Riprap work | 2027-01-30 → 2027-02-06 (+7d) | 2027-02-23 → 2027-03-02 (+7d) | 2d → 8d |
| ZG | **ZONE G** |  | 2026-10-07 → 2026-10-14 (+7d) |  |
| 11 | **STORM WATER LINE IN ( PH2-G-MCE0 )** |  | 2026-09-30 → 2026-10-07 (+7d) |  |
| 4 | **Manholes** |  | 2026-09-30 → 2026-10-07 (+7d) |  |
| 4 | **Testing** |  | 2026-09-30 → 2026-10-07 (+7d) |  |
| SDR-2-CON-ST-ZA-5470 | Testing for Manholes |  | 2026-09-30 → 2026-10-07 (+7d) | 144d → 157d |
| 12 | **STORM WATER LINE IN ( PH2-G-MCF0 )** |  | 2026-09-30 → 2026-10-07 (+7d) |  |
| 4 | **Manholes** |  | 2026-09-30 → 2026-10-07 (+7d) |  |
| 4 | **Testing** |  | 2026-09-30 → 2026-10-07 (+7d) |  |
| SDR-2-CON-ST-ZA-5620 | Testing for Manholes |  | 2026-09-30 → 2026-10-07 (+7d) | 109d → 104d |
| 13 | **STORM WATER LINE IN ( PH2-G-MCG0 )** |  | 2026-10-07 → 2026-10-14 (+7d) |  |
| 4 | **Manholes** |  | 2026-10-07 → 2026-10-14 (+7d) |  |
| 4 | **Testing** |  | 2026-10-07 → 2026-10-14 (+7d) |  |
| SDR-2-CON-ST-ZA-6070 | Testing for Manholes |  | 2026-10-07 → 2026-10-14 (+7d) | 109d → 104d |
| SN | **Sewerage Network** |  | 2027-03-24 → 2027-03-31 (+7d) |  |
| ZA | **ZONE A** |  | 2027-03-24 → 2027-03-31 (+7d) |  |
| 3 | **LINE 1 ( PH2-A-MCA0 )** |  | 2026-11-15 → 2026-11-22 (+7d) |  |
| 7 | **Pipes Work** |  | 2026-11-15 → 2026-11-22 (+7d) |  |
| 2 | **Pipes Laying** |  | 2026-09-28 → 2026-10-05 (+7d) |  |

| ID | Task | Start | Finish | Total float | Predecessors |
| --- | --- | --- | --- | --- | --- |
| SDR-2-CON-SE-ZA-1010 | 200 mm GRP Pipe Laying |  | 2026-09-28 → 2026-10-05 (+7d) | 129d → 124d |  |
| 3 | **Testing** |  | 2026-10-21 → 2026-10-28 (+7d) |  |  |
| SDR-2-CON-SE-ZA-1020 | Testing of 200 mm GRP Pipe. |  | 2026-10-21 → 2026-10-28 (+7d) | 109.1d → 104.1d |  |
| 6 | **Backfilling** | 2026-10-21 → 2026-10-28 (+7d) | 2026-11-15 → 2026-11-22 (+7d) |  |  |
| SDR-2-CON-SE-ZA-1430 | Backfilling of 200 mm GRP Pipe. | 2026-10-21 → 2026-10-28 (+7d) | 2026-11-15 → 2026-11-22 (+7d) | 109.1d → 104.1d |  |
| 4 | **Manholes** |  | 2026-10-22 → 2026-10-29 (+7d) |  |  |
| 3 | **Install Manholes** |  | 2026-10-21 → 2026-10-28 (+7d) |  |  |
| SDR-2-CON-SE-ZA-1040 | Manhole Installation |  | 2026-10-21 → 2026-10-28 (+7d) | 164.1d → 159.1d |  |
| 4 | **Testing** |  | 2026-09-28 → 2026-10-05 (+7d) |  |  |
| SDR-2-CON-SE-ZA-1050 | Testing |  | 2026-09-28 → 2026-10-05 (+7d) | 139d → 134d |  |
| 5 | **Backfilling** | 2026-09-29 → 2026-10-06 (+7d) | 2026-10-22 → 2026-10-29 (+7d) |  |  |
| SDR-2-CON-SE-ZA-1440 | Backfilling | 2026-09-29 → 2026-10-06 (+7d) | 2026-10-22 → 2026-10-29 (+7d) | 139d → 134d |  |
| 4 | **LINE 2 AND LINE 3 ( PH2-A-MCC0 )** |  | 2027-01-27 → 2027-02-03 (+7d) |  |  |
| 7 | **Pipes Work** |  | 2027-01-27 → 2027-02-03 (+7d) |  |  |
| 2 | **Pipes Laying** |  | 2026-11-01 → 2026-11-08 (+7d) |  |  |
| SDR-2-CON-SE-ZA-1470 | 200 mm GRP Pipe Laying |  | 2026-11-01 → 2026-11-08 (+7d) | 110d → 105d |  |
| 3 | **Testing** |  | 2027-01-03 → 2027-01-10 (+7d) |  |  |
| SDR-2-CON-SE-ZA-1480 | Testing of 200 mm GRP Pipe. |  | 2027-01-03 → 2027-01-10 (+7d) | 56d → 51d |  |
| 6 | **Backfilling** | 2027-01-04 → 2027-01-11 (+7d) | 2027-01-27 → 2027-02-03 (+7d) |  |  |
| SDR-2-CON-SE-ZA-1530 | Backfilling of 200 mm GRP Pipe. | 2027-01-04 → 2027-01-11 (+7d) | 2027-01-27 → 2027-02-03 (+7d) | 56d → 51d |  |
| 4 | **Manholes** |  | 2026-11-25 → 2026-12-02 (+7d) |  |  |
| 3 | **Install Manholes** |  | 2026-09-28 → 2026-10-05 (+7d) |  |  |
| SDR-2-CON-SE-ZA-1500 | Manhole Installation |  | 2026-09-28 → 2026-10-05 (+7d) | 184d → 179d |  |
| 4 | **Testing** |  | 2026-11-01 → 2026-11-08 (+7d) |  |  |
| SDR-2-CON-SE-ZA-1510 | Testing |  | 2026-11-01 → 2026-11-08 (+7d) | 110d → 105d |  |
| 5 | **Backfilling** | 2026-11-02 → 2026-11-09 (+7d) | 2026-11-25 → 2026-12-02 (+7d) |  |  |
| SDR-2-CON-SE-ZA-1540 | Backfilling | 2026-11-02 → 2026-11-09 (+7d) | 2026-11-25 → 2026-12-02 (+7d) | 110d → 105d |  |
| 5 | **LINE 4 AND LINE 5 ( PH2-A-MCD0 )** |  | 2027-03-24 → 2027-03-31 (+7d) |  |  |
| 7 | **Pipes Work** |  | 2027-01-27 → 2027-02-03 (+7d) |  |  |
| 2 | **Pipes Laying** |  | 2026-09-28 → 2026-10-05 (+7d) |  |  |
| SDR-2-CON-SE-ZA-1570 | 200 mm GRP Pipe Laying |  | 2026-09-28 → 2026-10-05 (+7d) | 139d → 134d |  |
| 3 | **Testing** |  | 2027-01-03 → 2027-01-10 (+7d) |  |  |
| SDR-2-CON-SE-ZA-1580 | Testing of 200 mm GRP Pipe. |  | 2027-01-03 → 2027-01-10 (+7d) | 56d → 51d |  |
| 6 | **Backfilling** | 2027-01-04 → 2027-01-11 (+7d) | 2027-01-27 → 2027-02-03 (+7d) |  |  |
| SDR-2-CON-SE-ZA-1630 | Backfilling of 200 mm GRP Pipe. | 2027-01-04 → 2027-01-11 (+7d) | 2027-01-27 → 2027-02-03 (+7d) | 56d → 51d |  |
| 4 | **Manholes** |  | 2027-03-24 → 2027-03-31 (+7d) |  |  |
| 3 | **Install Manholes** |  | 2027-01-03 → 2027-01-10 (+7d) |  |  |
| SDR-2-CON-SE-ZA-1600 | Manhole Installation |  | 2027-01-03 → 2027-01-10 (+7d) | 46d → 51d |  |
| 4 | **Testing** |  | 2027-01-04 → 2027-01-11 (+7d) |  |  |
| SDR-2-CON-SE-ZA-1610 | Testing |  | 2027-01-04 → 2027-01-11 (+7d) | 46d → 51d |  |
| 5 | **Backfilling** | 2027-02-24 → 2027-03-03 (+7d) | 2027-03-24 → 2027-03-31 (+7d) |  |  |
| SDR-2-CON-SE-ZA-2690 | Backfilling | 2027-02-24 → 2027-03-03 (+7d) | 2027-03-24 → 2027-03-31 (+7d) | 3d → 8d |  |
| 6 | **LINE 6 AND LINE 7 ( PH2-A-MCE0 )** |  | 2027-01-28 → 2027-02-04 (+7d) |  |  |
| 7 | **Pipes Work** |  | 2027-01-28 → 2027-02-04 (+7d) |  |  |
| 2 | **Pipes Laying** |  | 2026-12-17 → 2026-12-24 (+7d) |  |  |
| SDR-2-CON-SE-ZA-1670 | 200 mm GRP Pipe Laying |  | 2026-12-17 → 2026-12-24 (+7d) | 77d → 72d |  |
| 3 | **Testing** |  | 2027-01-04 → 2027-01-11 (+7d) |  |  |
| SDR-2-CON-SE-ZA-1680 | Testing of 200 mm GRP Pipe. |  | 2027-01-04 → 2027-01-11 (+7d) | 62d → 57d |  |
| 6 | **Backfilling** | 2027-01-05 → 2027-01-12 (+7d) | 2027-01-28 → 2027-02-04 (+7d) |  |  |
| SDR-2-CON-SE-ZA-1730 | Backfilling of 200 mm GRP Pipe. | 2027-01-05 → 2027-01-12 (+7d) | 2027-01-28 → 2027-02-04 (+7d) | 62d → 57d |  |
| 4 | **Manholes** |  | 2027-01-07 → 2027-01-14 (+7d) |  |  |
| 3 | **Install Manholes** |  | 2026-09-28 → 2026-10-05 (+7d) |  |  |
| SDR-2-CON-SE-ZA-1700 | Manhole Installation |  | 2026-09-28 → 2026-10-05 (+7d) | 184d → 179d |  |
| 4 | **Testing** |  | 2026-12-08 → 2026-12-15 (+7d) |  |  |
| SDR-2-CON-SE-ZA-1710 | Testing |  | 2026-12-08 → 2026-12-15 (+7d) | 80d → 75d |  |
| 5 | **Backfilling** | 2026-12-15 → 2026-12-22 (+7d) | 2027-01-07 → 2027-01-14 (+7d) |  |  |
| SDR-2-CON-SE-ZA-1740 | Backfilling | 2026-12-15 → 2026-12-22 (+7d) | 2027-01-07 → 2027-01-14 (+7d) | 80d → 75d |  |
| 7 | **LINE 8 AND LINE 9 ( PH2-A-MCF0 )** |  | 2026-10-29 → 2026-11-05 (+7d) |  |  |
| 7 | **Pipes Work** |  | 2026-10-22 → 2026-10-29 (+7d) |  |  |
| 2 | **Pipes Laying** |  | 2026-09-28 → 2026-10-05 (+7d) |  |  |
| SDR-2-CON-SE-ZA-1770 | 200 mm GRP Pipe Laying |  | 2026-09-28 → 2026-10-05 (+7d) | 139d → 134d |  |
| 3 | **Testing** |  | 2026-09-28 → 2026-10-05 (+7d) |  |  |
| SDR-2-CON-SE-ZA-1780 | Testing of 200 mm GRP Pipe. |  | 2026-09-28 → 2026-10-05 (+7d) | 139d → 134d |  |
| 6 | **Backfilling** | 2026-09-29 → 2026-10-06 (+7d) | 2026-10-22 → 2026-10-29 (+7d) |  |  |
| SDR-2-CON-SE-ZA-1830 | Backfilling of 200 mm GRP Pipe. | 2026-09-29 → 2026-10-06 (+7d) | 2026-10-22 → 2026-10-29 (+7d) | 139d → 134d |  |
| 4 | **Manholes** |  | 2026-10-29 → 2026-11-05 (+7d) |  |  |
| 3 | **Install Manholes** |  | 2026-09-28 → 2026-10-05 (+7d) |  |  |
| SDR-2-CON-SE-ZA-1800 | Manhole Installation |  | 2026-09-28 → 2026-10-05 (+7d) | 140d → 135d |  |
| 4 | **Testing** |  | 2026-09-29 → 2026-10-06 (+7d) |  |  |
| SDR-2-CON-SE-ZA-1810 | Testing |  | 2026-09-29 → 2026-10-06 (+7d) | 140d → 135d | SDR-2-CON-SE-ZA-1800 → SDR-2-CON-SE-ZA-1800 FF |

| ID | Task | Start | Finish | Total float |
| --- | --- | --- | --- | --- |
| 5 | **Backfilling** | 2026-10-10 → 2026-10-17 (+7d) | 2026-10-29 → 2026-11-05 (+7d) |  |
| SDR-2-CON-SE-ZA-1840 | Backfilling | 2026-10-10 → 2026-10-17 (+7d) | 2026-10-29 → 2026-11-05 (+7d) | 140d → 135d |
| 8 | **LINE 10 AND LINE 11 ( PH2-A-MCG0 )** |  | 2027-01-21 → 2027-01-28 (+7d) |  |
| 7 | **Pipes Work** |  | 2027-01-10 → 2027-01-17 (+7d) |  |
| 2 | **Pipes Laying** |  | 2026-09-28 → 2026-10-05 (+7d) |  |
| SDR-2-CON-SE-ZA-1870 | 200 mm GRP Pipe Laying |  | 2026-09-28 → 2026-10-05 (+7d) | 129d → 124d |
| 3 | **Testing** |  | 2026-12-17 → 2026-12-24 (+7d) |  |
| SDR-2-CON-SE-ZA-1880 | Testing of 200 mm GRP Pipe. |  | 2026-12-17 → 2026-12-24 (+7d) | 61d → 56d |
| 6 | **Backfilling** | 2026-12-17 → 2026-12-24 (+7d) | 2027-01-10 → 2027-01-17 (+7d) |  |
| SDR-2-CON-SE-ZA-1930 | Backfilling of 200 mm GRP Pipe. | 2026-12-17 → 2026-12-24 (+7d) | 2027-01-10 → 2027-01-17 (+7d) | 61d → 56d |
| 4 | **Manholes** |  | 2027-01-21 → 2027-01-28 (+7d) |  |
| 3 | **Install Manholes** |  | 2026-09-28 → 2026-10-05 (+7d) |  |
| SDR-2-CON-SE-ZA-1900 | Manhole Installation |  | 2026-09-28 → 2026-10-05 (+7d) | 184d → 179d |
| 4 | **Testing** |  | 2026-12-17 → 2026-12-24 (+7d) |  |
| SDR-2-CON-SE-ZA-1910 | Testing |  | 2026-12-17 → 2026-12-24 (+7d) | 61d → 56d |
| 5 | **Backfilling** | 2026-12-29 → 2027-01-05 (+7d) | 2027-01-21 → 2027-01-28 (+7d) |  |
| SDR-2-CON-SE-ZA-1940 | Backfilling | 2026-12-29 → 2027-01-05 (+7d) | 2027-01-21 → 2027-01-28 (+7d) | 61d → 56d |
| 9 | **LINE 12 AND LINE 13 ( PH2-A-MCH0 )** |  | 2026-11-16 → 2026-11-23 (+7d) |  |
| 7 | **Pipes Work** |  | 2026-11-16 → 2026-11-23 (+7d) |  |
| 2 | **Pipes Laying** |  | 2026-09-28 → 2026-10-05 (+7d) |  |
| SDR-2-CON-SE-ZA-1970 | 200 mm GRP Pipe Laying |  | 2026-09-28 → 2026-10-05 (+7d) | 101d → 114d |
| 3 | **Testing** | 2026-09-29 → 2026-10-06 (+7d) | 2026-10-22 → 2026-10-29 (+7d) |  |
| SDR-2-CON-SE-ZA-1980 | Testing of 200 mm GRP Pipe. | 2026-09-29 → 2026-10-06 (+7d) | 2026-10-22 → 2026-10-29 (+7d) | 101d → 114d |
| 6 | **Backfilling** | 2026-10-24 → 2026-10-31 (+7d) | 2026-11-16 → 2026-11-23 (+7d) |  |
| SDR-2-CON-SE-ZA-2030 | Backfilling of 200 mm GRP Pipe. | 2026-10-24 → 2026-10-31 (+7d) | 2026-11-16 → 2026-11-23 (+7d) | 101d → 114d |
| 4 | **Manholes** |  | 2026-11-10 → 2026-11-17 (+7d) |  |
| 3 | **Install Manholes** |  | 2026-09-28 → 2026-10-05 (+7d) |  |
| SDR-2-CON-SE-ZA-2000 | Manhole Installation |  | 2026-09-28 → 2026-10-05 (+7d) | 130d → 125d |
| 4 | **Testing** | 2026-09-29 → 2026-10-06 (+7d) | 2026-10-22 → 2026-10-29 (+7d) |  |
| SDR-2-CON-SE-ZA-2010 | Testing | 2026-09-29 → 2026-10-06 (+7d) | 2026-10-22 → 2026-10-29 (+7d) | 130d → 125d |
| 5 | **Backfilling** | 2026-10-24 → 2026-10-31 (+7d) | 2026-11-10 → 2026-11-17 (+7d) |  |
| SDR-2-CON-SE-ZA-2040 | Backfilling | 2026-10-24 → 2026-10-31 (+7d) | 2026-11-10 → 2026-11-17 (+7d) | 130d → 125d |
| ZG | **ZONE G** |  | 2026-12-27 → 2027-01-03 (+7d) |  |
| 3 | **LINE 49 AND LINE 51 ( PH2-G-MCE0 )** |  | 2026-10-07 → 2026-10-14 (+7d) |  |
| 4 | **Manholes** |  | 2026-10-07 → 2026-10-14 (+7d) |  |
| 4 | **Testing** |  | 2026-10-07 → 2026-10-14 (+7d) |  |
| SDR-2-CON-SE-ZA-2110 | Testing |  | 2026-10-07 → 2026-10-14 (+7d) | 158d → 153d |
| 4 | **LINE 50 ( PH2-G-MCD0 )** |  | 2026-12-27 → 2027-01-03 (+7d) |  |
| 7 | **Pipes Work** |  | 2026-12-27 → 2027-01-03 (+7d) |  |
| 3 | **Testing** |  | 2026-12-27 → 2027-01-03 (+7d) |  |
| SDR-2-CON-SE-ZA-2180 | Testing of 200 mm GRP Pipe. |  | 2026-12-27 → 2027-01-03 (+7d) | 89d → 84d |
| 4 | **Manholes** |  | 2026-10-07 → 2026-10-14 (+7d) |  |
| 4 | **Testing** |  | 2026-10-07 → 2026-10-14 (+7d) |  |
| SDR-2-CON-SE-ZA-2210 | Testing |  | 2026-10-07 → 2026-10-14 (+7d) | 152d → 147d |
| 5 | **LINE 52 AND LINE 53 ( PH2-G-MCF0 )** |  | 2026-10-07 → 2026-10-14 (+7d) |  |
| 4 | **Manholes** |  | 2026-10-07 → 2026-10-14 (+7d) |  |
| 4 | **Testing** |  | 2026-10-07 → 2026-10-14 (+7d) |  |
| SDR-2-CON-SE-ZA-2310 | Testing |  | 2026-10-07 → 2026-10-14 (+7d) | 151d → 146d |
| 6 | **LINE 54 AND LINE 55 ( PH2-G-MCG0 )** |  | 2026-10-07 → 2026-10-14 (+7d) |  |
| 4 | **Manholes** |  | 2026-10-07 → 2026-10-14 (+7d) |  |
| 4 | **Testing** |  | 2026-10-07 → 2026-10-14 (+7d) |  |
| SDR-2-CON-SE-ZA-2410 | Testing |  | 2026-10-07 → 2026-10-14 (+7d) | 164d → 159d |
| TSE | **TSE Network** |  | 2027-05-05 → 2027-05-12 (+7d) |  |
| ZA | **ZONE A** |  | 2027-05-05 → 2027-05-12 (+7d) |  |
| 1 | **TSE NETWORK IN ( PH2-COL-MC10 )** |  | 2027-04-05 → 2027-04-12 (+7d) |  |
| 6 | **Pipes Work** |  | 2027-04-05 → 2027-04-12 (+7d) |  |
| 1 | **Excavation** |  | 2026-12-07 → 2026-12-13 (+6d) |  |
| SDR-2-CON-TS-ZA-1000 | Excavation for TSE HDPE Pipes 225 mm Section 2 |  | 2026-12-07 → 2026-12-13 (+6d) |  |
| SDR-2-CON-TS-ZA-3200 | Excavation for TSE HDPE Pipes 225 mm Section 1 |  | 2026-11-01 → 2026-11-08 (+7d) | 39d → 34d |
| 6 | **bedding Works** | 2026-12-08 → 2026-12-14 (+6d) | 2026-12-31 → 2027-01-06 (+6d) |  |
| SDR-2-CON-TS-ZA-1900 | Sand bedding for TSE HDPE Pipes 225 mm | 2026-12-08 → 2026-12-14 (+6d) | 2026-12-31 → 2027-01-06 (+6d) | 47d → 43d |
| 2 | **Pipes Laying** | 2027-01-25 → 2027-02-01 (+7d) | 2027-02-17 → 2027-02-25 (+8d) |  |
| SDR-2-CON-TS-ZA-1010 | Install TSE 225 mm HDPE Pipe | 2027-01-25 → 2027-02-01 (+7d) | 2027-02-17 → 2027-02-25 (+8d) | 27d → 22d |
| 5 | **Testing** | 2027-02-18 → 2027-02-27 (+9d) | 2027-03-07 → 2027-03-18 (+11d) |  |
| SDR-2-CON-TS-ZA-1080 | Testing of TSE HDPE Pipe 225 mm. | 2027-02-18 → 2027-02-27 (+9d) | 2027-03-07 → 2027-03-18 (+11d) | 27d → 22d |
| 7 | **Backfilling** | 2027-03-08 → 2027-03-20 (+12d) | 2027-04-05 → 2027-04-12 (+7d) |  |
| SDR-2-CON-TS-ZA-1910 | Backfilling of TSE HDPE Pipe 225 mm. | 2027-03-08 → 2027-03-20 (+12d) | 2027-04-05 → 2027-04-12 (+7d) | 27d → 22d |
| 3 | **Valve Chambers & Valves** | 2026-11-09 → 2026-11-16 (+7d) | 2027-03-30 → 2027-04-06 (+7d) |  |
| 3 | **Excavation** | 2026-11-09 → 2026-11-16 (+7d) | 2026-12-24 → 2026-12-31 (+7d) |  |
| SDR-2-CON-TS-ZA-3210 | Excavation for Valve Chambers Section 1 | 2026-11-09 → 2026-11-16 (+7d) | 2026-12-01 → 2026-12-08 (+7d) | 32d → 27d |

| ID | Task | Start | Finish | Complete | Total float |
| --- | --- | --- | --- | --- | --- |
| SDR-2-CON-TS-ZA-1040 | Excavation for Valve Chambers Section 2 | 2026-12-02 → 2026-12-09 (+7d) | 2026-12-24 → 2026-12-31 (+7d) |  | 32d → 27d |
| 1 | **bedding Works** | 2026-12-26 → 2027-01-02 (+7d) | 2027-01-18 → 2027-01-25 (+7d) |  |  |
| SDR-2-CON-TS-ZA-1020 | Sand bedding for Valve Chambers | 2026-12-26 → 2027-01-02 (+7d) | 2027-01-18 → 2027-01-25 (+7d) |  | 32d → 27d |
| 4 | **Install Chambers & Valves** | 2027-01-19 → 2027-01-26 (+7d) | 2027-02-11 → 2027-02-18 (+7d) |  |  |
| SDR-2-CON-TS-ZA-1050 | Valve Chambers & Valves Installation | 2027-01-19 → 2027-01-26 (+7d) | 2027-02-11 → 2027-02-18 (+7d) |  | 32d → 27d |
| 5 | **Testing** | 2027-02-13 → 2027-02-20 (+7d) | 2027-03-01 → 2027-03-08 (+7d) |  |  |
| SDR-2-CON-TS-ZA-1060 | Testing Chambers & Valves Installation | 2027-02-13 → 2027-02-20 (+7d) | 2027-03-01 → 2027-03-08 (+7d) |  | 32d → 27d |
| 6 | **Backfilling** | 2027-03-02 → 2027-03-14 (+12d) | 2027-03-30 → 2027-04-06 (+7d) |  |  |
| SDR-2-CON-TS-ZA-1070 | Backfilling Chambers & Valves Installation | 2027-03-02 → 2027-03-14 (+12d) | 2027-03-30 → 2027-04-06 (+7d) |  | 32d → 27d |
| 2 | **TSE NETWORK IN ( PH2-COL-MC20 )** | 2026-11-15 → 2026-10-01 (-45d) | 2027-04-01 → 2027-04-08 (+7d) |  |  |
| 6 | **Pipes Work** | 2026-11-15 → 2026-10-01 (-45d) | 2027-03-28 → 2027-04-04 (+7d) |  |  |
| 1 | **Excavation** | 2026-11-15 → 2026-10-01 (-45d) | 2026-12-30 → 2027-01-06 (+7d) |  |  |
| SDR-2-CON-TS-ZA-3220 | Excavation for TSE HDPE Pipes 225 mm Section 1 | 2026-11-15 → 2026-10-01 A (-45d) | 2026-12-07 → 2026-12-14 (+7d) | 0% → 25% | 34d → 29d |
| SDR-2-CON-TS-ZA-2200 | Excavation for TSE HDPE Pipes 225 mm Section 2 | 2026-12-08 → 2026-12-15 (+7d) | 2026-12-30 → 2027-01-06 (+7d) |  | 34d → 29d |
| 6 | **bedding Works** | 2026-12-31 → 2027-01-07 (+7d) | 2027-01-24 → 2027-01-31 (+7d) |  |  |
| SDR-2-CON-TS-ZA-2280 | Sand bedding for TSE HDPE Pipes 225 mm | 2026-12-31 → 2027-01-07 (+7d) | 2027-01-24 → 2027-01-31 (+7d) |  | 34d → 29d |
| 2 | **Pipes Laying** | 2027-01-25 → 2026-10-03 (-114d) | 2027-02-17 → 2027-02-25 (+8d) |  |  |
| SDR-2-CON-TS-ZA-2210 | Install TSE 225 mm HDPE Pipe | 2027-01-25 → 2026-10-03 A (-114d) | 2027-02-17 → 2027-02-25 (+8d) | 0% → 15% | 34d → 29d |
| 5 | **Testing** | 2027-02-18 → 2027-02-27 (+9d) | 2027-03-02 → 2027-03-14 (+12d) |  |  |
| SDR-2-CON-TS-ZA-2270 | Testing of TSE HDPE Pipe 225 mm. | 2027-02-18 → 2027-02-27 (+9d) | 2027-03-02 → 2027-03-14 (+12d) |  | 34d → 29d |
| 7 | **Backfilling** | 2027-03-03 → 2027-03-15 (+12d) | 2027-03-28 → 2027-04-04 (+7d) |  |  |
| SDR-2-CON-TS-ZA-2290 | Backfilling of TSE HDPE Pipe 225 mm. | 2027-03-03 → 2027-03-15 (+12d) | 2027-03-28 → 2027-04-04 (+7d) |  | 34d → 29d |
| 3 | **Valve Chambers & Valves** | 2026-11-15 → 2026-11-22 (+7d) | 2027-04-01 → 2027-04-08 (+7d) |  |  |
| 3 | **Excavation** | 2026-11-15 → 2026-11-22 (+7d) | 2026-12-30 → 2027-01-06 (+7d) |  |  |
| SDR-2-CON-TS-ZA-3230 | Excavation for Valve Chambers Section 1 | 2026-11-15 → 2026-11-22 (+7d) | 2026-12-07 → 2026-12-14 (+7d) |  | 34d → 29d |
| SDR-2-CON-TS-ZA-2230 | Excavation for Valve Chambers Section 2 | 2026-12-08 → 2026-12-15 (+7d) | 2026-12-30 → 2027-01-06 (+7d) |  | 34d → 29d |
| 1 | **bedding Works** | 2027-01-05 → 2027-01-12 (+7d) | 2027-01-28 → 2027-02-04 (+7d) |  |  |
| SDR-2-CON-TS-ZA-2220 | Sand bedding for Valve Chambers | 2027-01-05 → 2027-01-12 (+7d) | 2027-01-28 → 2027-02-04 (+7d) |  | 30d → 25d |
| 4 | **Install Chambers & Valves** | 2027-01-30 → 2027-02-06 (+7d) | 2027-02-23 → 2027-03-02 (+7d) |  |  |
| SDR-2-CON-TS-ZA-2240 | Valve Chambers & Valves Installation | 2027-01-30 → 2027-02-06 (+7d) | 2027-02-23 → 2027-03-02 (+7d) |  | 30d → 25d |
| 5 | **Testing** | 2027-02-24 → 2027-03-03 (+7d) | 2027-03-07 → 2027-03-18 (+11d) |  |  |
| SDR-2-CON-TS-ZA-2250 | Testing Chambers & Valves Installation | 2027-02-24 → 2027-03-03 (+7d) | 2027-03-07 → 2027-03-18 (+11d) |  | 30d → 25d |
| 6 | **Backfilling** | 2027-03-08 → 2027-03-20 (+12d) | 2027-04-01 → 2027-04-08 (+7d) |  |  |
| SDR-2-CON-TS-ZA-2260 | Backfilling Chambers & Valves Installation | 2027-03-08 → 2027-03-20 (+12d) | 2027-04-01 → 2027-04-08 (+7d) |  | 30d → 25d |
| 3 | **TSE NETWORK IN ( PH2-A-MCC0 )** |  | 2027-04-06 → 2027-04-13 (+7d) |  |  |
| 6 | **Pipes Work** |  | 2027-02-09 → 2027-02-16 (+7d) |  |  |
| 1 | **Excavation** |  | 2026-11-25 → 2026-12-02 (+7d) |  |  |
| SDR-2-CON-TS-ZA-3240 | Excavation for TSE HDPE Pipes 125 mm Section 1 |  | 2026-10-21 → 2026-10-01 A (-20d) | 50% → 100% | 75d → none |
| SDR-2-CON-TS-ZA-1180 | Excavation for TSE HDPE Pipes 125 mm Section 2 | 2026-11-02 → 2026-11-09 (+7d) | 2026-11-25 → 2026-12-02 (+7d) |  | 69d → 64d |
| 3 | **bedding Works** | 2026-11-26 → 2026-12-03 (+7d) | 2026-12-20 → 2026-12-27 (+7d) |  |  |
| SDR-2-CON-TS-ZA-1920 | Sand bedding for TSE HDPE Pipes 125 mm | 2026-11-26 → 2026-12-03 (+7d) | 2026-12-20 → 2026-12-27 (+7d) |  | 69d → 64d |
| 2 | **Pipes Laying** | 2026-12-21 → 2026-12-28 (+7d) | 2027-01-13 → 2027-01-20 (+7d) |  |  |
| SDR-2-CON-TS-ZA-1190 | Install TSE 125 mm HDPE Pipe | 2026-12-21 → 2026-12-28 (+7d) | 2027-01-13 → 2027-01-20 (+7d) |  | 69d → 64d |
| 5 | **Testing** | 2027-01-14 → 2027-01-21 (+7d) | 2027-01-25 → 2027-02-01 (+7d) |  |  |
| SDR-2-CON-TS-ZA-1260 | Testing of TSE HDPE Pipe 125 mm. | 2027-01-14 → 2027-01-21 (+7d) | 2027-01-25 → 2027-02-01 (+7d) |  | 69d → 64d |
| 4 | **Backfilling** | 2027-01-26 → 2027-02-02 (+7d) | 2027-02-09 → 2027-02-16 (+7d) |  |  |
| SDR-2-CON-TS-ZA-1930 | Backfilling of TSE HDPE Pipe 125 mm. | 2027-01-26 → 2027-02-02 (+7d) | 2027-02-09 → 2027-02-16 (+7d) |  | 69d → 64d |
| 3 | **Valve Chambers & Valves** | 2026-09-28 → 2026-10-05 (+7d) | 2027-04-06 → 2027-04-13 (+7d) |  |  |
| 3 | **Excavation** | 2026-09-28 → 2026-10-05 (+7d) | 2026-11-11 → 2026-11-18 (+7d) |  |  |
| SDR-2-CON-TS-ZA-3250 | Excavation for Valve Chambers Section 1 | 2026-09-28 → 2026-10-05 (+7d) | 2026-10-21 → 2026-10-28 (+7d) |  | 75.3d → 70.3d |
| SDR-2-CON-TS-ZA-2010 | Excavation for Valve Chambers Section 2 | 2026-10-22 → 2026-10-29 (+7d) | 2026-11-11 → 2026-11-18 (+7d) |  | 75.3d → 70.3d |
| 1 | **bedding Works** | 2026-11-12 → 2026-11-19 (+7d) | 2026-12-06 → 2026-12-13 (+7d) |  |  |
| SDR-2-CON-TS-ZA-2000 | Sand bedding for Valve Chambers | 2026-11-12 → 2026-11-19 (+7d) | 2026-12-06 → 2026-12-13 (+7d) |  | 75.3d → 70.3d |
| 4 | **Install Chambers & Valves** | 2027-02-02 → 2027-02-09 (+7d) | 2027-02-27 → 2027-03-06 (+7d) |  |  |
| SDR-2-CON-TS-ZA-2020 | Valve Chambers & Valves Installation | 2027-02-02 → 2027-02-09 (+7d) | 2027-02-27 → 2027-03-06 (+7d) |  | 26.3d → 21.3d |
| 5 | **Testing** | 2027-02-28 → 2027-03-07 (+7d) | 2027-03-07 → 2027-03-18 (+11d) |  |  |
| SDR-2-CON-TS-ZA-2030 | Testing Chambers & Valves Installation | 2027-02-28 → 2027-03-07 (+7d) | 2027-03-07 → 2027-03-18 (+11d) |  | 26.3d → 21.3d |
| 6 | **Backfilling** | 2027-03-08 → 2027-03-20 (+12d) | 2027-04-06 → 2027-04-13 (+7d) |  |  |
| SDR-2-CON-TS-ZA-2040 | Backfilling Chambers & Valves Installation | 2027-03-08 → 2027-03-20 (+12d) | 2027-04-06 → 2027-04-13 (+7d) |  | 26.3d → 21.3d |
| 4 | **TSE NETWORK IN ( PH2-A-MCD0 )** |  | 2027-04-11 → 2027-04-18 (+7d) |  |  |
| 6 | **Pipes Work** |  | 2027-04-10 → 2027-04-17 (+7d) |  |  |
| 1 | **Excavation** |  | 2026-10-19 → 2026-10-26 (+7d) |  |  |
| SDR-2-CON-TS-ZA-1270 | Excavation for TSE HDPE Pipes 90 mm Section 2 |  | 2026-10-19 → 2026-10-26 (+7d) |  | 87d → 90d |
| 3 | **bedding Works** |  | 2026-11-09 → 2026-11-16 (+7d) |  |  |
| SDR-2-CON-TS-ZA-1940 | Sand bedding for TSE HDPE Pipes 90 mm |  | 2026-11-09 → 2026-11-16 (+7d) |  | 95d → 90d |
| 2 | **Pipes Laying** |  | 2027-02-27 → 2027-03-06 (+7d) |  |  |
| SDR-2-CON-TS-ZA-1280 | Install TSE 90 mm HDPE Pipe |  | 2027-02-27 → 2027-03-06 (+7d) | 25% → 30% | 23d → 18d |
| 5 | **Testing** | 2027-02-28 → 2027-03-07 (+7d) | 2027-03-16 → 2027-03-23 (+7d) |  |  |
| SDR-2-CON-TS-ZA-1350 | Testing of TSE HDPE Pipe 90 mm. | 2027-02-28 → 2027-03-07 (+7d) | 2027-03-16 → 2027-03-23 (+7d) |  | 23d → 18d |
| 4 | **Backfilling** | 2027-03-17 → 2027-03-24 (+7d) | 2027-04-10 → 2027-04-17 (+7d) |  |  |

| ID | Task | Start | Finish | Complete | Total float |
| --- | --- | --- | --- | --- | --- |
| SDR-2-CON-TS-ZA-1950 | Backfilling of TSE HDPE Pipe 90 mm. | 2027-03-17 → 2027-03-24 (+7d) | 2027-04-10 → 2027-04-17 (+7d) |  | 23d → 18d |
| 3 | **Valve Chambers & Valves** | 2026-09-28 → 2026-10-05 (+7d) | 2027-04-11 → 2027-04-18 (+7d) |  |  |
| 3 | **Excavation** | 2026-09-28 → 2026-10-05 (+7d) | 2026-11-11 → 2026-11-18 (+7d) |  |  |
| SDR-2-CON-TS-ZA-3270 | Excavation for Valve Chambers Section 1 | 2026-09-28 → 2026-10-05 (+7d) | 2026-10-20 → 2026-10-27 (+7d) |  | 76d → 71d |
| SDR-2-CON-TS-ZA-2060 | Excavation for Valve Chambers Section 2 | 2026-10-21 → 2026-10-28 (+7d) | 2026-11-11 → 2026-11-18 (+7d) |  | 76d → 71d |
| 1 | **bedding Works** | 2026-11-12 → 2026-11-19 (+7d) | 2026-11-30 → 2026-12-07 (+7d) |  |  |
| SDR-2-CON-TS-ZA-2050 | Sand bedding for Valve Chambers | 2026-11-12 → 2026-11-19 (+7d) | 2026-11-30 → 2026-12-07 (+7d) |  | 76d → 71d |
| 4 | **Install Chambers & Valves** | 2027-02-02 → 2027-02-09 (+7d) | 2027-02-27 → 2027-03-06 (+7d) |  |  |
| SDR-2-CON-TS-ZA-2070 | Valve Chambers & Valves Installation | 2027-02-02 → 2027-02-09 (+7d) | 2027-02-27 → 2027-03-06 (+7d) |  | 22d → 17d |
| 5 | **Testing** | 2027-02-28 → 2027-03-07 (+7d) | 2027-03-20 → 2027-03-27 (+7d) |  |  |
| SDR-2-CON-TS-ZA-2080 | Testing Chambers & Valves Installation | 2027-02-28 → 2027-03-07 (+7d) | 2027-03-20 → 2027-03-27 (+7d) |  | 22d → 17d |
| 6 | **Backfilling** | 2027-03-21 → 2027-03-28 (+7d) | 2027-04-11 → 2027-04-18 (+7d) |  |  |
| SDR-2-CON-TS-ZA-2090 | Backfilling Chambers & Valves Installation | 2027-03-21 → 2027-03-28 (+7d) | 2027-04-11 → 2027-04-18 (+7d) |  | 22d → 17d |
| 5 | **TSE NETWORK IN ( PH2-A-MCE0 )** |  | 2027-05-05 → 2027-05-12 (+7d) |  |  |
| 6 | **Pipes Work** |  | 2027-05-05 → 2027-05-12 (+7d) |  |  |
| 1 | **Excavation** |  | 2027-02-17 → 2027-02-25 (+8d) |  |  |
| SDR-2-CON-TS-ZA-2600 | Excavation for TSE HDPE Pipes 90 mm Section 2 | 2027-01-26 → 2027-02-02 (+7d) | 2027-02-17 → 2027-02-25 (+8d) |  | 1d → 14d |
| 3 | **bedding Works** | 2027-02-18 → 2026-09-30 (-141d) | 2027-03-17 → 2027-03-24 (+7d) |  |  |
| SDR-2-CON-TS-ZA-2630 | Sand bedding for TSE HDPE Pipes 90 mm | 2027-02-18 → 2026-09-30 A (-141d) | 2027-03-17 → 2027-03-24 (+7d) | 0% → 25% | 1d → 14d |
| 2 | **Pipes Laying** | 2027-03-18 → 2026-09-30 (-169d) | 2027-04-07 → 2027-04-14 (+7d) |  |  |
| SDR-2-CON-TS-ZA-2610 | Install TSE 90 mm HDPE Pipe | 2027-03-18 → 2026-09-30 A (-169d) | 2027-04-07 → 2027-04-14 (+7d) | 0% → 25% | 1d → 14d |
| 5 | **Testing** | 2027-04-08 → 2027-04-15 (+7d) | 2027-04-19 → 2027-04-26 (+7d) |  |  |
| SDR-2-CON-TS-ZA-2620 | Testing of TSE HDPE Pipe 90 mm. | 2027-04-08 → 2027-04-15 (+7d) | 2027-04-19 → 2027-04-26 (+7d) |  | 1d → 14d |
| 4 | **Backfilling** | 2027-04-13 → 2027-04-20 (+7d) | 2027-05-05 → 2027-05-12 (+7d) |  |  |
| SDR-2-CON-TS-ZA-2640 | Backfilling of TSE HDPE Pipe 90 mm. | 2027-04-13 → 2027-04-20 (+7d) | 2027-05-05 → 2027-05-12 (+7d) |  | 1d → 14d |
| 3 | **Valve Chambers & Valves** | 2026-09-28 → 2026-10-05 (+7d) | 2027-01-31 → 2027-02-07 (+7d) |  |  |
| 3 | **Excavation** | 2026-09-28 → 2026-10-05 (+7d) | 2026-11-12 → 2026-11-19 (+7d) |  |  |
| SDR-2-CON-TS-ZA-3290 | Excavation for Valve Chambers Section 1 | 2026-09-28 → 2026-10-05 (+7d) | 2026-10-21 → 2026-10-28 (+7d) |  | 77d → 72d |
| SDR-2-CON-TS-ZA-2660 | Excavation for Valve Chambers Section 2 | 2026-10-22 → 2026-10-29 (+7d) | 2026-11-12 → 2026-11-19 (+7d) |  | 77d → 72d |
| 1 | **bedding Works** | 2026-11-14 → 2026-11-21 (+7d) | 2026-12-06 → 2026-12-13 (+7d) |  |  |
| SDR-2-CON-TS-ZA-2650 | Sand bedding for Valve Chambers | 2026-11-14 → 2026-11-21 (+7d) | 2026-12-06 → 2026-12-13 (+7d) |  | 77d → 72d |
| 4 | **Install Chambers & Valves** | 2026-12-07 → 2026-12-14 (+7d) | 2026-12-30 → 2027-01-06 (+7d) |  |  |
| SDR-2-CON-TS-ZA-2670 | Valve Chambers & Valves Installation | 2026-12-07 → 2026-12-14 (+7d) | 2026-12-30 → 2027-01-06 (+7d) |  | 77d → 72d |
| 5 | **Testing** | 2026-12-31 → 2027-01-07 (+7d) | 2027-01-07 → 2027-01-14 (+7d) |  |  |
| SDR-2-CON-TS-ZA-2680 | Testing Chambers & Valves Installation | 2026-12-31 → 2027-01-07 (+7d) | 2027-01-07 → 2027-01-14 (+7d) |  | 77d → 72d |
| 6 | **Backfilling** | 2027-01-09 → 2027-01-16 (+7d) | 2027-01-31 → 2027-02-07 (+7d) |  |  |
| SDR-2-CON-TS-ZA-2690 | Backfilling Chambers & Valves Installation | 2027-01-09 → 2027-01-16 (+7d) | 2027-01-31 → 2027-02-07 (+7d) |  | 77d → 72d |
| 6 | **TSE NETWORK IN ( PH2-A-MCF0 )** | 2026-09-28 → 2026-10-05 (+7d) | 2027-03-17 → 2027-03-24 (+7d) |  |  |
| 6 | **Pipes Work** | 2026-09-28 → 2026-10-05 (+7d) | 2027-02-03 → 2027-02-10 (+7d) |  |  |
| 1 | **Excavation** | 2026-09-28 → 2026-10-05 (+7d) | 2026-11-12 → 2026-11-19 (+7d) |  |  |
| SDR-2-CON-TS-ZA-3300 | Excavation for TSE HDPE Pipes 90 mm Section 1 | 2026-09-28 → 2026-10-05 (+7d) | 2026-10-20 → 2026-10-27 (+7d) |  | 74d → 69d |
| SDR-2-CON-TS-ZA-2700 | Excavation for TSE HDPE Pipes 90 mm Section 2 | 2026-10-21 → 2026-10-28 (+7d) | 2026-11-12 → 2026-11-19 (+7d) |  | 74d → 69d |
| 3 | **bedding Works** | 2026-11-14 → 2026-11-21 (+7d) | 2026-12-06 → 2026-12-13 (+7d) |  |  |
| SDR-2-CON-TS-ZA-2730 | Sand bedding for TSE HDPE Pipes 90 mm | 2026-11-14 → 2026-11-21 (+7d) | 2026-12-06 → 2026-12-13 (+7d) |  | 74d → 69d |
| 2 | **Pipes Laying** | 2026-12-07 → 2026-12-14 (+7d) | 2026-12-28 → 2027-01-04 (+7d) |  |  |
| SDR-2-CON-TS-ZA-2710 | Install TSE 90 mm HDPE Pipe | 2026-12-07 → 2026-12-14 (+7d) | 2026-12-28 → 2027-01-04 (+7d) |  | 74d → 69d |
| 5 | **Testing** | 2026-12-29 → 2027-01-05 (+7d) | 2027-01-10 → 2027-01-17 (+7d) |  |  |
| SDR-2-CON-TS-ZA-2720 | Testing of TSE HDPE Pipe 90 mm. | 2026-12-29 → 2027-01-05 (+7d) | 2027-01-10 → 2027-01-17 (+7d) |  | 74d → 69d |
| 4 | **Backfilling** | 2027-01-11 → 2027-01-18 (+7d) | 2027-02-03 → 2027-02-10 (+7d) |  |  |
| SDR-2-CON-TS-ZA-2740 | Backfilling of TSE HDPE Pipe 90 mm. | 2027-01-11 → 2027-01-18 (+7d) | 2027-02-03 → 2027-02-10 (+7d) |  | 74d → 69d |
| 3 | **Valve Chambers & Valves** | 2026-09-28 → 2026-10-05 (+7d) | 2027-03-17 → 2027-03-24 (+7d) |  |  |
| 3 | **Excavation** | 2026-09-28 → 2026-10-05 (+7d) | 2026-12-19 → 2026-12-26 (+7d) |  |  |
| SDR-2-CON-TS-ZA-3310 | Excavation for Valve Chambers Section 1 | 2026-09-28 → 2026-10-05 (+7d) | 2026-10-20 → 2026-10-27 (+7d) |  | 93d → 87d |
| SDR-2-CON-TS-ZA-2760 | Excavation for Valve Chambers Section 2 | 2026-11-26 → 2026-12-03 (+7d) | 2026-12-19 → 2026-12-26 (+7d) |  | 62d → 56d |
| 1 | **bedding Works** | 2026-12-20 → 2026-12-27 (+7d) | 2027-01-09 → 2027-01-16 (+7d) |  |  |
| SDR-2-CON-TS-ZA-2750 | Sand bedding for Valve Chambers | 2026-12-20 → 2026-12-27 (+7d) | 2027-01-09 → 2027-01-16 (+7d) |  | 62d → 56d |
| 4 | **Install Chambers & Valves** | 2027-01-10 → 2027-01-17 (+7d) | 2027-02-02 → 2027-02-09 (+7d) |  |  |
| SDR-2-CON-TS-ZA-2770 | Valve Chambers & Valves Installation | 2027-01-10 → 2027-01-17 (+7d) | 2027-02-02 → 2027-02-09 (+7d) |  | 62d → 56d |
| 5 | **Testing** | 2027-02-03 → 2027-02-10 (+7d) | 2027-02-15 → 2027-02-23 (+8d) |  |  |
| SDR-2-CON-TS-ZA-2780 | Testing Chambers & Valves Installation | 2027-02-03 → 2027-02-10 (+7d) | 2027-02-15 → 2027-02-23 (+8d) |  | 62d → 56d |
| 6 | **Backfilling** | 2027-02-16 → 2027-02-24 (+8d) | 2027-03-17 → 2027-03-24 (+7d) |  |  |
| SDR-2-CON-TS-ZA-2790 | Backfilling Chambers & Valves Installation | 2027-02-16 → 2027-02-24 (+8d) | 2027-03-17 → 2027-03-24 (+7d) |  | 62d → 56d |
| 7 | **TSE NETWORK IN ( PH2-A-MCG0 )** | 2026-09-28 → 2026-10-05 (+7d) | 2027-02-14 → 2027-02-21 (+7d) |  |  |
| 6 | **Pipes Work** | 2026-09-28 → 2026-10-05 (+7d) | 2027-02-03 → 2027-02-10 (+7d) |  |  |
| 1 | **Excavation** | 2026-09-28 → 2026-10-05 (+7d) | 2026-11-12 → 2026-11-19 (+7d) |  |  |
| SDR-2-CON-TS-ZA-3320 | Excavation for TSE HDPE Pipes 90 mm Section 1 | 2026-09-28 → 2026-10-05 (+7d) | 2026-10-20 → 2026-10-27 (+7d) |  | 48d → 43d |
| SDR-2-CON-TS-ZA-2800 | Excavation for TSE HDPE Pipes 90 mm Section 2 | 2026-10-21 → 2026-10-28 (+7d) | 2026-11-12 → 2026-11-19 (+7d) |  | 66d → 61d |
| 3 | **bedding Works** | 2026-11-14 → 2026-11-21 (+7d) | 2026-12-03 → 2026-12-10 (+7d) |  |  |
| SDR-2-CON-TS-ZA-2830 | Sand bedding for TSE HDPE Pipes 90 mm | 2026-11-14 → 2026-11-21 (+7d) | 2026-12-03 → 2026-12-10 (+7d) |  | 66d → 61d |
| 2 | **Pipes Laying** | 2026-12-05 → 2026-12-12 (+7d) | 2026-12-28 → 2027-01-04 (+7d) |  |  |

| ID | Task | Start | Finish | Complete | Total float |
| --- | --- | --- | --- | --- | --- |
| SDR-2-CON-TS-ZA-2810 | Install TSE 90 mm HDPE Pipe | 2026-12-05 → 2026-12-12 (+7d) | 2026-12-28 → 2027-01-04 (+7d) |  | 66d → 61d |
| 5 | **Testing** | 2026-12-29 → 2027-01-05 (+7d) | 2027-01-12 → 2027-01-19 (+7d) |  |  |
| SDR-2-CON-TS-ZA-2820 | Testing of TSE HDPE Pipe 90 mm. | 2026-12-29 → 2027-01-05 (+7d) | 2027-01-12 → 2027-01-19 (+7d) |  | 66d → 61d |
| 4 | **Backfilling** | 2027-01-13 → 2027-01-20 (+7d) | 2027-02-03 → 2027-02-10 (+7d) |  |  |
| SDR-2-CON-TS-ZA-2840 | Backfilling of TSE HDPE Pipe 90 mm. | 2027-01-13 → 2027-01-20 (+7d) | 2027-02-03 → 2027-02-10 (+7d) |  | 66d → 61d |
| 3 | **Valve Chambers & Valves** | 2026-09-28 → 2026-10-05 (+7d) | 2027-02-14 → 2027-02-21 (+7d) |  |  |
| 3 | **Excavation** | 2026-09-28 → 2026-10-05 (+7d) | 2026-11-12 → 2026-11-19 (+7d) |  |  |
| SDR-2-CON-TS-ZA-3330 | Excavation for Valve Chambers Section 1 | 2026-09-28 → 2026-10-05 (+7d) | 2026-10-20 → 2026-10-27 (+7d) |  | 65d → 60d |
| SDR-2-CON-TS-ZA-2860 | Excavation for Valve Chambers Section 2 | 2026-10-21 → 2026-10-28 (+7d) | 2026-11-12 → 2026-11-19 (+7d) |  | 65d → 60d |
| 1 | **bedding Works** | 2026-11-14 → 2026-11-21 (+7d) | 2026-12-05 → 2026-12-12 (+7d) |  |  |
| SDR-2-CON-TS-ZA-2850 | Sand bedding for Valve Chambers | 2026-11-14 → 2026-11-21 (+7d) | 2026-12-05 → 2026-12-12 (+7d) |  | 65d → 60d |
| 4 | **Install Chambers & Valves** | 2026-12-06 → 2026-12-13 (+7d) | 2026-12-29 → 2027-01-05 (+7d) |  |  |
| SDR-2-CON-TS-ZA-2870 | Valve Chambers & Valves Installation | 2026-12-06 → 2026-12-13 (+7d) | 2026-12-29 → 2027-01-05 (+7d) |  | 65d → 60d |
| 5 | **Testing** | 2026-12-30 → 2027-01-06 (+7d) | 2027-01-21 → 2027-01-28 (+7d) |  |  |
| SDR-2-CON-TS-ZA-2880 | Testing Chambers & Valves Installation | 2026-12-30 → 2027-01-06 (+7d) | 2027-01-21 → 2027-01-28 (+7d) |  | 65d → 60d |
| 6 | **Backfilling** | 2027-01-23 → 2027-01-30 (+7d) | 2027-02-14 → 2027-02-21 (+7d) |  |  |
| SDR-2-CON-TS-ZA-2890 | Backfilling Chambers & Valves Installation | 2027-01-23 → 2027-01-30 (+7d) | 2027-02-14 → 2027-02-21 (+7d) |  | 65d → 60d |
| 8 | **TSE NETWORK IN ( PH2-A-MCH0 )** | 2026-09-28 → 2026-10-05 (+7d) | 2027-03-31 → 2027-04-07 (+7d) |  |  |
| 6 | **Pipes Work** | 2026-09-28 → 2026-10-05 (+7d) | 2027-03-25 → 2027-04-01 (+7d) |  |  |
| 1 | **Excavation** | 2026-09-28 → 2026-10-05 (+7d) | 2026-12-26 → 2027-01-02 (+7d) |  |  |
| SDR-2-CON-TS-ZA-3340 | Excavation for TSE HDPE Pipes 250 mm Section 1 | 2026-09-28 → 2026-10-05 (+7d) | 2026-10-20 → 2026-10-27 (+7d) |  | 68d → 63d |
| SDR-2-CON-TS-ZA-1630 | Excavation for TSE HDPE Pipes 250 mm Section 2 | 2026-12-03 → 2026-12-10 (+7d) | 2026-12-26 → 2027-01-02 (+7d) |  | 31d → 26d |
| 7 | **bedding Works** | 2026-12-27 → 2027-01-03 (+7d) | 2027-01-19 → 2027-01-26 (+7d) |  |  |
| SDR-2-CON-TS-ZA-1960 | Sand bedding for TSE HDPE Pipes 250 mm | 2026-12-27 → 2027-01-03 (+7d) | 2027-01-19 → 2027-01-26 (+7d) |  | 36d → 31d |
| 2 | **Pipes Laying** | 2027-01-20 → 2027-01-27 (+7d) | 2027-02-13 → 2027-02-20 (+7d) |  |  |
| SDR-2-CON-TS-ZA-1640 | Install TSE 250 mm HDPE Pipe | 2027-01-20 → 2027-01-27 (+7d) | 2027-02-13 → 2027-02-20 (+7d) |  | 36d → 31d |
| 5 | **Testing** | 2027-02-14 → 2027-02-21 (+7d) | 2027-03-04 → 2027-03-16 (+12d) |  |  |
| SDR-2-CON-TS-ZA-1710 | Testing of TSE HDPE Pipe 250 mm. | 2027-02-14 → 2027-02-21 (+7d) | 2027-03-04 → 2027-03-16 (+12d) |  | 36d → 31d |
| 8 | **Backfilling** | 2027-03-06 → 2027-03-17 (+11d) | 2027-03-25 → 2027-04-01 (+7d) |  |  |
| SDR-2-CON-TS-ZA-1970 | Backfilling of TSE HDPE Pipe 250 mm. | 2027-03-06 → 2027-03-17 (+11d) | 2027-03-25 → 2027-04-01 (+7d) |  | 36d → 31d |
| 3 | **Valve Chambers & Valves** | 2026-09-28 → 2026-10-05 (+7d) | 2027-03-31 → 2027-04-07 (+7d) |  |  |
| 3 | **Excavation** | 2026-09-28 → 2026-10-05 (+7d) | 2026-12-26 → 2027-01-02 (+7d) |  |  |
| SDR-2-CON-TS-ZA-3350 | Excavation for Valve Chambers Section 1 | 2026-09-28 → 2026-10-05 (+7d) | 2026-10-20 → 2026-10-27 (+7d) |  | 68d → 63d |
| SDR-2-CON-TS-ZA-2110 | Excavation for Valve Chambers Section 2 | 2026-12-03 → 2026-12-10 (+7d) | 2026-12-26 → 2027-01-02 (+7d) |  | 31d → 26d |
| 1 | **bedding Works** | 2026-12-27 → 2027-01-03 (+7d) | 2027-01-19 → 2027-01-26 (+7d) |  |  |
| SDR-2-CON-TS-ZA-2100 | Sand bedding for Valve Chambers | 2026-12-27 → 2027-01-03 (+7d) | 2027-01-19 → 2027-01-26 (+7d) |  | 31d → 26d |
| 4 | **Install Chambers & Valves** | 2027-01-20 → 2027-01-27 (+7d) | 2027-02-13 → 2027-02-20 (+7d) |  |  |
| SDR-2-CON-TS-ZA-2120 | Valve Chambers & Valves Installation | 2027-01-20 → 2027-01-27 (+7d) | 2027-02-13 → 2027-02-20 (+7d) |  | 31d → 26d |
| 5 | **Testing** | 2027-02-14 → 2027-02-21 (+7d) | 2027-03-03 → 2027-03-15 (+12d) |  |  |
| SDR-2-CON-TS-ZA-2130 | Testing Chambers & Valves Installation | 2027-02-14 → 2027-02-21 (+7d) | 2027-03-03 → 2027-03-15 (+12d) |  | 31d → 26d |
| 6 | **Backfilling** | 2027-03-04 → 2027-03-16 (+12d) | 2027-03-31 → 2027-04-07 (+7d) |  |  |
| SDR-2-CON-TS-ZA-2140 | Backfilling Chambers & Valves Installation | 2027-03-04 → 2027-03-16 (+12d) | 2027-03-31 → 2027-04-07 (+7d) |  | 31d → 26d |
| 9 | **TSE NETWORK IN ( PH2-ART-MC00 )** |  | 2027-03-07 → 2027-03-18 (+11d) |  |  |
| 6 | **Pipes Work** |  | 2027-02-10 → 2027-02-17 (+7d) |  |  |
| 1 | **Excavation** |  | 2026-11-12 → 2026-11-19 (+7d) |  |  |
| SDR-2-CON-TS-ZA-1720 | Excavation for TSE HDPE Pipes 450 mm Section 2 | 2026-10-21 → 2026-10-01 A (-20d) | 2026-11-12 → 2026-11-19 (+7d) | 0% → 25% | 68d → 63d |
| 7 | **bedding Works** | 2026-11-14 → 2026-11-21 (+7d) | 2026-12-07 → 2026-12-14 (+7d) |  |  |
| SDR-2-CON-TS-ZA-1980 | Sand bedding for TSE HDPE Pipes 450 mm | 2026-11-14 → 2026-11-21 (+7d) | 2026-12-07 → 2026-12-14 (+7d) |  | 68d → 63d |
| 2 | **Pipes Laying** | 2026-12-08 → 2026-12-15 (+7d) | 2026-12-31 → 2027-01-07 (+7d) |  |  |
| SDR-2-CON-TS-ZA-1730 | Install TSE 450 mm HDPE Pipe | 2026-12-08 → 2026-12-15 (+7d) | 2026-12-31 → 2027-01-07 (+7d) |  | 68d → 63d |
| 5 | **Testing** | 2027-01-02 → 2027-01-09 (+7d) | 2027-01-18 → 2027-01-25 (+7d) |  |  |
| SDR-2-CON-TS-ZA-1800 | Testing of TSE HDPE Pipe 450 mm. | 2027-01-02 → 2027-01-09 (+7d) | 2027-01-18 → 2027-01-25 (+7d) |  | 68d → 63d |
| 8 | **Backfilling** | 2027-01-19 → 2027-01-26 (+7d) | 2027-02-10 → 2027-02-17 (+7d) |  |  |
| SDR-2-CON-TS-ZA-1990 | Backfilling of TSE HDPE Pipe 450 mm. | 2027-01-19 → 2027-01-26 (+7d) | 2027-02-10 → 2027-02-17 (+7d) |  | 68d → 63d |
| 3 | **Valve Chambers & Valves** | 2026-10-21 → 2026-10-28 (+7d) | 2027-03-07 → 2027-03-18 (+11d) |  |  |
| 3 | **Excavation** | 2026-10-21 → 2026-10-28 (+7d) | 2026-12-06 → 2026-12-13 (+7d) |  |  |
| SDR-2-CON-TS-ZA-3370 | Excavation for Valve Chambers Section 1 | 2026-10-21 → 2026-10-28 (+7d) | 2026-11-12 → 2026-11-19 (+7d) |  | 48d → 43d |
| SDR-2-CON-TS-ZA-2160 | Excavation for Valve Chambers Section 2 | 2026-11-14 → 2026-11-21 (+7d) | 2026-12-06 → 2026-12-13 (+7d) |  | 48d → 43d |
| 1 | **bedding Works** | 2026-12-07 → 2026-12-14 (+7d) | 2026-12-30 → 2027-01-06 (+7d) |  |  |
| SDR-2-CON-TS-ZA-2150 | Sand bedding for Valve Chambers | 2026-12-07 → 2026-12-14 (+7d) | 2026-12-30 → 2027-01-06 (+7d) |  | 48d → 43d |
| 4 | **Install Chambers & Valves** | 2026-12-31 → 2027-01-07 (+7d) | 2027-01-24 → 2027-01-31 (+7d) |  |  |
| SDR-2-CON-TS-ZA-2170 | Valve Chambers & Valves Installation | 2026-12-31 → 2027-01-07 (+7d) | 2027-01-24 → 2027-01-31 (+7d) |  | 48d → 43d |
| 5 | **Testing** | 2027-01-25 → 2027-02-01 (+7d) | 2027-02-10 → 2027-02-17 (+7d) |  |  |
| SDR-2-CON-TS-ZA-2180 | Testing Chambers & Valves Installation | 2027-01-25 → 2027-02-01 (+7d) | 2027-02-10 → 2027-02-17 (+7d) |  | 48d → 43d |
| 6 | **Backfilling** | 2027-02-11 → 2027-02-18 (+7d) | 2027-03-07 → 2027-03-18 (+11d) |  |  |
| SDR-2-CON-TS-ZA-2190 | Backfilling Chambers & Valves Installation | 2027-02-11 → 2027-02-18 (+7d) | 2027-03-07 → 2027-03-18 (+11d) |  | 48d → 43d |
| 10 | **TSE NETWORK IN ( PH2-ART-MC10 )** |  | 2027-02-24 → 2027-03-03 (+7d) |  |  |
| 6 | **Pipes Work** |  | 2026-11-30 → 2026-12-07 (+7d) |  |  |
| 1 | **Excavation** |  | 2026-11-30 → 2026-10-01 (-60d) |  |  |
| SDR-2-CON-TS-ZA-3100 | Excavation for TSE HDPE Pipes 450 mm Section 2 |  | 2026-11-30 → 2026-10-01 A (-60d) | 50% → 100% | 130d → none |

| ID | Task | Start | Finish | Total float |
| --- | --- | --- | --- | --- |
| 7 | **bedding Works** |  | 2026-11-30 → 2026-12-07 (+7d) |  |
| SDR-2-CON-TS-ZA-3130 | Sand bedding for TSE HDPE Pipes 450 mm |  | 2026-11-30 → 2026-12-07 (+7d) | 130d → 125d |
| 2 | **Pipes Laying** |  | 2026-11-30 → 2026-12-07 (+7d) |  |
| SDR-2-CON-TS-ZA-3110 | Install TSE 450 mm HDPE Pipe |  | 2026-11-30 → 2026-12-07 (+7d) | 130d → 125d |
| 5 | **Testing** |  | 2026-11-30 → 2026-12-07 (+7d) |  |
| SDR-2-CON-TS-ZA-3120 | Testing of TSE HDPE Pipe 450 mm. |  | 2026-11-30 → 2026-12-07 (+7d) | 130d → 125d |
| 8 | **Backfilling** |  | 2026-11-30 → 2026-12-07 (+7d) |  |
| SDR-2-CON-TS-ZA-3140 | Backfilling of TSE HDPE Pipe 450 mm. |  | 2026-11-30 → 2026-12-07 (+7d) | 130d → 125d |
| 3 | **Valve Chambers & Valves** | 2026-10-21 → 2026-10-28 (+7d) | 2027-02-24 → 2027-03-03 (+7d) |  |
| 3 | **Excavation** | 2026-10-21 → 2026-10-28 (+7d) | 2026-12-05 → 2026-12-12 (+7d) |  |
| SDR-2-CON-TS-ZA-3390 | Excavation for Valve Chambers Section 1 | 2026-10-21 → 2026-10-28 (+7d) | 2026-11-12 → 2026-11-19 (+7d) | 57d → 52d |
| SDR-2-CON-TS-ZA-3160 | Excavation for Valve Chambers Section 2 | 2026-11-14 → 2026-11-21 (+7d) | 2026-12-05 → 2026-12-12 (+7d) | 57d → 52d |
| 1 | **bedding Works** | 2026-12-06 → 2026-12-13 (+7d) | 2026-12-26 → 2027-01-02 (+7d) |  |
| SDR-2-CON-TS-ZA-3150 | Sand bedding for Valve Chambers | 2026-12-06 → 2026-12-13 (+7d) | 2026-12-26 → 2027-01-02 (+7d) | 57d → 52d |
| 4 | **Install Chambers & Valves** | 2026-12-27 → 2027-01-03 (+7d) | 2027-01-19 → 2027-01-26 (+7d) |  |
| SDR-2-CON-TS-ZA-3170 | Valve Chambers & Valves Installation | 2026-12-27 → 2027-01-03 (+7d) | 2027-01-19 → 2027-01-26 (+7d) | 57d → 52d |
| 5 | **Testing** | 2027-01-20 → 2027-01-27 (+7d) | 2027-01-31 → 2027-02-07 (+7d) |  |
| SDR-2-CON-TS-ZA-3180 | Testing Chambers & Valves Installation | 2027-01-20 → 2027-01-27 (+7d) | 2027-01-31 → 2027-02-07 (+7d) | 57d → 52d |
| 6 | **Backfilling** | 2027-02-01 → 2027-02-08 (+7d) | 2027-02-24 → 2027-03-03 (+7d) |  |
| SDR-2-CON-TS-ZA-3190 | Backfilling Chambers & Valves Installation | 2027-02-01 → 2027-02-08 (+7d) | 2027-02-24 → 2027-03-03 (+7d) | 57d → 52d |
| ZG | **ZONE G** |  | 2027-05-05 → 2027-05-12 (+7d) |  |
| 1 | **TSE NETWORK IN ( PH2-G-MCA0 )** |  | 2027-02-09 → 2027-02-16 (+7d) |  |
| 6 | **Pipes Work** |  | 2026-11-05 → 2026-11-12 (+7d) |  |
| 1 | **Excavation** |  | 2026-09-28 → 2026-10-05 (+7d) |  |
| SDR-2-CON-TS-ZA-2300 | Excavation for TSE HDPE Pipes 225 mm Section 2 |  | 2026-09-28 → 2026-10-05 (+7d) | 89d → 84d |
| SDR-2-CON-TS-ZA-3400 | Excavation for TSE HDPE Pipes 225 mm Section 1 |  | 2026-09-28 → 2026-10-05 (+7d) | 69d → 64d |
| 6 | **bedding Works** |  | 2026-09-28 → 2026-10-05 (+7d) |  |
| SDR-2-CON-TS-ZA-2380 | Sand bedding for TSE HDPE Pipes 225 mm |  | 2026-09-28 → 2026-10-05 (+7d) | 151d → 146d |
| 2 | **Pipes Laying** |  | 2026-09-28 → 2026-10-05 (+7d) |  |
| SDR-2-CON-TS-ZA-2310 | Install TSE 225 mm HDPE Pipe |  | 2026-09-28 → 2026-10-05 (+7d) | 151d → 146d |
| 5 | **Testing** | 2026-09-29 → 2026-10-06 (+7d) | 2026-10-13 → 2026-10-20 (+7d) |  |
| SDR-2-CON-TS-ZA-2370 | Testing of TSE HDPE Pipe 225 mm. | 2026-09-29 → 2026-10-06 (+7d) | 2026-10-13 → 2026-10-20 (+7d) | 151d → 146d |
| 7 | **Backfilling** | 2026-10-14 → 2026-10-21 (+7d) | 2026-11-05 → 2026-11-12 (+7d) |  |
| SDR-2-CON-TS-ZA-2390 | Backfilling of TSE HDPE Pipe 225 mm. | 2026-10-14 → 2026-10-21 (+7d) | 2026-11-05 → 2026-11-12 (+7d) | 151d → 146d |
| 3 | **Valve Chambers & Valves** | 2026-09-28 → 2026-10-05 (+7d) | 2027-02-09 → 2027-02-16 (+7d) |  |
| 3 | **Excavation** | 2026-09-28 → 2026-10-05 (+7d) | 2026-11-12 → 2026-11-19 (+7d) |  |
| SDR-2-CON-TS-ZA-3410 | Excavation for Valve Chambers Section 1 | 2026-09-28 → 2026-10-05 (+7d) | 2026-10-20 → 2026-10-27 (+7d) | 69d → 64d |
| SDR-2-CON-TS-ZA-2330 | Excavation for Valve Chambers Section 2 | 2026-10-21 → 2026-10-28 (+7d) | 2026-11-12 → 2026-11-19 (+7d) | 69d → 64d |
| 1 | **bedding Works** | 2026-11-14 → 2026-11-21 (+7d) | 2026-12-07 → 2026-12-14 (+7d) |  |
| SDR-2-CON-TS-ZA-2320 | Sand bedding for Valve Chambers | 2026-11-14 → 2026-11-21 (+7d) | 2026-12-07 → 2026-12-14 (+7d) | 69d → 64d |
| 4 | **Install Chambers & Valves** | 2026-12-08 → 2026-12-15 (+7d) | 2026-12-31 → 2027-01-07 (+7d) |  |
| SDR-2-CON-TS-ZA-2340 | Valve Chambers & Valves Installation | 2026-12-08 → 2026-12-15 (+7d) | 2026-12-31 → 2027-01-07 (+7d) | 69d → 64d |
| 5 | **Testing** | 2027-01-02 → 2027-01-09 (+7d) | 2027-01-16 → 2027-01-23 (+7d) |  |
| SDR-2-CON-TS-ZA-2350 | Testing Chambers & Valves Installation | 2027-01-02 → 2027-01-09 (+7d) | 2027-01-16 → 2027-01-23 (+7d) | 69d → 64d |
| 6 | **Backfilling** | 2027-01-18 → 2027-01-25 (+7d) | 2027-02-09 → 2027-02-16 (+7d) |  |
| SDR-2-CON-TS-ZA-2360 | Backfilling Chambers & Valves Installation | 2027-01-18 → 2027-01-25 (+7d) | 2027-02-09 → 2027-02-16 (+7d) | 69d → 64d |
| 2 | **TSE NETWORK IN ( PH2-G-MCE0 )** |  | 2027-04-12 → 2027-04-19 (+7d) |  |
| 6 | **Pipes Work** |  | 2026-12-22 → 2026-12-29 (+7d) |  |
| 1 | **Excavation** |  | 2026-09-28 → 2026-10-05 (+7d) |  |
| SDR-2-CON-TS-ZA-2400 | Excavation for TSE HDPE Pipes 125 mm Section 2 |  | 2026-09-28 → 2026-10-05 (+7d) | 98d → 93d |
| SDR-2-CON-TS-ZA-3420 | Excavation for TSE HDPE Pipes 125 mm Section 1 |  | 2026-09-28 → 2026-10-05 (+7d) | 98d → 93d |
| 3 | **bedding Works** | 2026-09-29 → 2026-10-06 (+7d) | 2026-10-22 → 2026-10-29 (+7d) |  |
| SDR-2-CON-TS-ZA-2430 | Sand bedding for TSE HDPE Pipes 125 mm | 2026-09-29 → 2026-10-06 (+7d) | 2026-10-22 → 2026-10-29 (+7d) | 111d → 106d |
| 2 | **Pipes Laying** | 2026-10-24 → 2026-10-31 (+7d) | 2026-11-16 → 2026-11-23 (+7d) |  |
| SDR-2-CON-TS-ZA-2410 | Install TSE 125 mm HDPE Pipe | 2026-10-24 → 2026-10-31 (+7d) | 2026-11-16 → 2026-11-23 (+7d) | 111d → 106d |
| 5 | **Testing** | 2026-11-17 → 2026-11-24 (+7d) | 2026-11-28 → 2026-12-05 (+7d) |  |
| SDR-2-CON-TS-ZA-2420 | Testing of TSE HDPE Pipe 125 mm. | 2026-11-17 → 2026-11-24 (+7d) | 2026-11-28 → 2026-12-05 (+7d) | 111d → 106d |
| 4 | **Backfilling** | 2026-11-29 → 2026-12-06 (+7d) | 2026-12-22 → 2026-12-29 (+7d) |  |
| SDR-2-CON-TS-ZA-2440 | Backfilling of TSE HDPE Pipe 125 mm. | 2026-11-29 → 2026-12-06 (+7d) | 2026-12-22 → 2026-12-29 (+7d) | 111d → 106d |
| 3 | **Valve Chambers & Valves** | 2026-09-29 → 2026-10-06 (+7d) | 2027-04-12 → 2027-04-19 (+7d) |  |
| 3 | **Excavation** | 2026-09-29 → 2026-10-06 (+7d) | 2026-11-16 → 2026-11-23 (+7d) |  |
| SDR-2-CON-TS-ZA-3430 | Excavation for Valve Chambers Section 1 | 2026-09-29 → 2026-10-06 (+7d) | 2026-10-22 → 2026-10-29 (+7d) | 69d → 64d |
| SDR-2-CON-TS-ZA-2460 | Excavation for Valve Chambers Section 2 | 2026-10-24 → 2026-10-31 (+7d) | 2026-11-16 → 2026-11-23 (+7d) | 69d → 64d |
| 1 | **bedding Works** | 2026-11-17 → 2026-11-24 (+7d) | 2026-12-10 → 2026-12-17 (+7d) |  |
| SDR-2-CON-TS-ZA-2450 | Sand bedding for Valve Chambers | 2026-11-17 → 2026-11-24 (+7d) | 2026-12-10 → 2026-12-17 (+7d) | 69d → 64d |
| 4 | **Install Chambers & Valves** | 2027-02-06 → 2027-02-13 (+7d) | 2027-03-02 → 2027-03-14 (+12d) |  |
| SDR-2-CON-TS-ZA-2470 | Valve Chambers & Valves Installation | 2027-02-06 → 2027-02-13 (+7d) | 2027-03-02 → 2027-03-14 (+12d) | 21d → 16d |
| 5 | **Testing** | 2027-03-03 → 2027-03-15 (+12d) | 2027-03-17 → 2027-03-24 (+7d) |  |
| SDR-2-CON-TS-ZA-2480 | Testing Chambers & Valves Installation | 2027-03-03 → 2027-03-15 (+12d) | 2027-03-17 → 2027-03-24 (+7d) | 21d → 16d |
| 6 | **Backfilling** | 2027-03-20 → 2027-03-27 (+7d) | 2027-04-12 → 2027-04-19 (+7d) |  |

| ID | Task | Start | Finish | Total float |
| --- | --- | --- | --- | --- |
| SDR-2-CON-TS-ZA-2490 | Backfilling Chambers & Valves Installation | 2027-03-20 → 2027-03-27 (+7d) | 2027-04-12 → 2027-04-19 (+7d) | 21d → 16d |
| 3 | **TSE NETWORK IN ( PH2-G-MCF0 )** |  | 2027-04-14 → 2027-04-21 (+7d) |  |
| 6 | **Pipes Work** |  | 2027-03-30 → 2027-04-06 (+7d) |  |
| 1 | **Excavation** |  | 2026-11-30 → 2026-12-07 (+7d) |  |
| SDR-2-CON-TS-ZA-2900 | Excavation for TSE HDPE Pipes 90 mm Section 2 |  | 2026-11-30 → 2026-12-07 (+7d) | 26d → 21d |
| SDR-2-CON-TS-ZA-3440 | Excavation for TSE HDPE Pipes 90 mm Section 1 |  | 2026-10-31 → 2026-11-07 (+7d) | 37d → 32d |
| 3 | **bedding Works** | 2026-12-13 → 2026-12-20 (+7d) | 2027-01-05 → 2027-01-12 (+7d) |  |
| SDR-2-CON-TS-ZA-2930 | Sand bedding for TSE HDPE Pipes 90 mm | 2026-12-13 → 2026-12-20 (+7d) | 2027-01-05 → 2027-01-12 (+7d) | 37d → 32d |
| 2 | **Pipes Laying** | 2027-01-06 → 2027-01-13 (+7d) | 2027-01-30 → 2027-02-06 (+7d) |  |
| SDR-2-CON-TS-ZA-2910 | Install TSE 90 mm HDPE Pipe | 2027-01-06 → 2027-01-13 (+7d) | 2027-01-30 → 2027-02-06 (+7d) | 37d → 32d |
| 5 | **Testing** | 2027-02-06 → 2027-02-13 (+7d) | 2027-03-01 → 2027-03-08 (+7d) |  |
| SDR-2-CON-TS-ZA-2920 | Testing of TSE HDPE Pipe 90 mm. | 2027-02-06 → 2027-02-13 (+7d) | 2027-03-01 → 2027-03-08 (+7d) | 32d → 27d |
| 4 | **Backfilling** | 2027-03-02 → 2027-03-14 (+12d) | 2027-03-30 → 2027-04-06 (+7d) |  |
| SDR-2-CON-TS-ZA-2940 | Backfilling of TSE HDPE Pipe 90 mm. | 2027-03-02 → 2027-03-14 (+12d) | 2027-03-30 → 2027-04-06 (+7d) | 32d → 27d |
| 3 | **Valve Chambers & Valves** | 2026-10-29 → 2026-11-05 (+7d) | 2027-04-14 → 2027-04-21 (+7d) |  |
| 3 | **Excavation** | 2026-10-29 → 2026-11-05 (+7d) | 2026-12-14 → 2026-12-21 (+7d) |  |
| SDR-2-CON-TS-ZA-3450 | Excavation for Valve Chambers Section 1 | 2026-10-29 → 2026-11-05 (+7d) | 2026-11-21 → 2026-11-28 (+7d) | 37d → 32d |
| SDR-2-CON-TS-ZA-2960 | Excavation for Valve Chambers Section 2 | 2026-11-22 → 2026-11-29 (+7d) | 2026-12-14 → 2026-12-21 (+7d) | 37d → 32d |
| 1 | **bedding Works** | 2027-01-05 → 2027-01-12 (+7d) | 2027-01-25 → 2027-02-01 (+7d) |  |
| SDR-2-CON-TS-ZA-2950 | Sand bedding for Valve Chambers | 2027-01-05 → 2027-01-12 (+7d) | 2027-01-25 → 2027-02-01 (+7d) | 19d → 14d |
| 4 | **Install Chambers & Valves** | 2027-01-26 → 2027-02-02 (+7d) | 2027-02-18 → 2027-02-27 (+9d) |  |
| SDR-2-CON-TS-ZA-2970 | Valve Chambers & Valves Installation | 2027-01-26 → 2027-02-02 (+7d) | 2027-02-18 → 2027-02-27 (+9d) | 19d → 14d |
| 5 | **Testing** | 2027-02-20 → 2027-02-28 (+8d) | 2027-03-20 → 2027-03-27 (+7d) |  |
| SDR-2-CON-TS-ZA-2980 | Testing Chambers & Valves Installation | 2027-02-20 → 2027-02-28 (+8d) | 2027-03-20 → 2027-03-27 (+7d) | 19d → 14d |
| 6 | **Backfilling** | 2027-03-22 → 2027-03-29 (+7d) | 2027-04-14 → 2027-04-21 (+7d) |  |
| SDR-2-CON-TS-ZA-2990 | Backfilling Chambers & Valves Installation | 2027-03-22 → 2027-03-29 (+7d) | 2027-04-14 → 2027-04-21 (+7d) | 19d → 14d |
| 4 | **TSE NETWORK IN ( PH2-G-MCG0 )** |  | 2027-05-04 → 2027-05-11 (+7d) |  |
| 6 | **Pipes Work** |  | 2027-01-10 → 2027-01-17 (+7d) |  |
| 1 | **Excavation** |  | 2026-09-28 → 2026-10-05 (+7d) |  |
| SDR-2-CON-TS-ZA-3000 | Excavation for TSE HDPE Pipes 90 mm Section 2 |  | 2026-09-28 → 2026-10-05 (+7d) | 86d → 81d |
| 3 | **bedding Works** | 2026-09-29 → 2026-10-06 (+7d) | 2026-10-22 → 2026-10-29 (+7d) |  |
| SDR-2-CON-TS-ZA-3030 | Sand bedding for TSE HDPE Pipes 90 mm | 2026-09-29 → 2026-10-06 (+7d) | 2026-10-22 → 2026-10-29 (+7d) | 108d → 103d |
| 2 | **Pipes Laying** | 2026-10-24 → 2026-10-31 (+7d) | 2026-11-16 → 2026-11-23 (+7d) |  |
| SDR-2-CON-TS-ZA-3010 | Install TSE 90 mm HDPE Pipe | 2026-10-24 → 2026-10-31 (+7d) | 2026-11-16 → 2026-11-23 (+7d) | 108d → 103d |
| 5 | **Testing** | 2026-11-17 → 2026-11-24 (+7d) | 2026-12-01 → 2026-12-08 (+7d) |  |
| SDR-2-CON-TS-ZA-3020 | Testing of TSE HDPE Pipe 90 mm. | 2026-11-17 → 2026-11-24 (+7d) | 2026-12-01 → 2026-12-08 (+7d) | 108d → 103d |
| 4 | **Backfilling** | 2026-12-17 → 2026-12-24 (+7d) | 2027-01-10 → 2027-01-17 (+7d) |  |
| SDR-2-CON-TS-ZA-3040 | Backfilling of TSE HDPE Pipe 90 mm. | 2026-12-17 → 2026-12-24 (+7d) | 2027-01-10 → 2027-01-17 (+7d) | 95d → 90d |
| 3 | **Valve Chambers & Valves** | 2026-09-28 → 2026-10-05 (+7d) | 2027-05-04 → 2027-05-11 (+7d) |  |
| 3 | **Excavation** | 2026-09-28 → 2026-10-05 (+7d) | 2026-11-12 → 2026-11-19 (+7d) |  |
| SDR-2-CON-TS-ZA-3470 | Excavation for Valve Chambers Section 1 | 2026-09-28 → 2026-10-05 (+7d) | 2026-10-20 → 2026-10-27 (+7d) | 68d → 81d |
| SDR-2-CON-TS-ZA-3060 | Excavation for Valve Chambers Section 2 | 2026-10-21 → 2026-10-28 (+7d) | 2026-11-12 → 2026-11-19 (+7d) | 68d → 81d |
| 1 | **bedding Works** | 2027-01-05 → 2027-01-12 (+7d) | 2027-01-28 → 2027-02-04 (+7d) |  |
| SDR-2-CON-TS-ZA-3050 | Sand bedding for Valve Chambers | 2027-01-05 → 2027-01-12 (+7d) | 2027-01-28 → 2027-02-04 (+7d) | 23d → 36d |
| 4 | **Install Chambers & Valves** | 2027-02-24 → 2027-03-03 (+7d) | 2027-03-24 → 2027-03-31 (+7d) |  |
| SDR-2-CON-TS-ZA-3070 | Valve Chambers & Valves Installation | 2027-02-24 → 2027-03-03 (+7d) | 2027-03-24 → 2027-03-31 (+7d) | 2d → 15d |
| 5 | **Testing** | 2027-03-18 → 2027-03-25 (+7d) | 2027-04-08 → 2027-04-15 (+7d) |  |
| SDR-2-CON-TS-ZA-3080 | Testing Chambers & Valves Installation | 2027-03-18 → 2027-03-25 (+7d) | 2027-04-08 → 2027-04-15 (+7d) | 2d → 15d |
| 6 | **Backfilling** | 2027-04-11 → 2027-04-18 (+7d) | 2027-05-04 → 2027-05-11 (+7d) |  |
| SDR-2-CON-TS-ZA-3090 | Backfilling Chambers & Valves Installation | 2027-04-11 → 2027-04-18 (+7d) | 2027-05-04 → 2027-05-11 (+7d) | 2d → 15d |
| 5 | **TSE NETWORK IN ( PH2-G-MCZ0 )** |  | 2027-05-05 → 2027-05-12 (+7d) |  |
| 6 | **Pipes Work** |  | 2027-05-05 → 2027-05-12 (+7d) |  |
| 1 | **Excavation** |  | 2026-09-28 → 2026-10-05 (+7d) |  |
| SDR-2-CON-TS-ZA-2500 | Excavation for TSE HDPE Pipes 125 mm Section 2 |  | 2026-09-28 → 2026-10-05 (+7d) | 85d → 80d |
| SDR-2-CON-TS-ZA-3480 | Excavation for TSE HDPE Pipes 125 mm Section 1 |  | 2026-09-28 → 2026-10-05 (+7d) | 69d → 64d |
| 3 | **bedding Works** | 2027-01-12 → 2027-01-19 (+7d) | 2027-02-04 → 2027-02-11 (+7d) |  |
| SDR-2-CON-TS-ZA-2530 | Sand bedding for TSE HDPE Pipes 125 mm | 2027-01-12 → 2027-01-19 (+7d) | 2027-02-04 → 2027-02-11 (+7d) | 7d → 8d |
| 2 | **Pipes Laying** | 2027-02-06 → 2027-02-13 (+7d) | 2027-03-02 → 2027-03-14 (+12d) |  |
| SDR-2-CON-TS-ZA-2510 | Install TSE 125 mm HDPE Pipe | 2027-02-06 → 2027-02-13 (+7d) | 2027-03-02 → 2027-03-14 (+12d) | 44d → 39d |
| 5 | **Testing** | 2027-03-18 → 2027-03-25 (+7d) | 2027-03-27 → 2027-04-03 (+7d) |  |
| SDR-2-CON-TS-ZA-2520 | Testing of TSE HDPE Pipe 125 mm. | 2027-03-18 → 2027-03-25 (+7d) | 2027-03-27 → 2027-04-03 (+7d) | 35d → 30d |
| 4 | **Backfilling** | 2027-04-15 → 2027-04-22 (+7d) | 2027-05-05 → 2027-05-12 (+7d) |  |
| SDR-2-CON-TS-ZA-2540 | Backfilling of TSE HDPE Pipe 125 mm. | 2027-04-15 → 2027-04-22 (+7d) | 2027-05-05 → 2027-05-12 (+7d) | 20d → 14d |
| 3 | **Valve Chambers & Valves** | 2026-09-28 → 2026-10-05 (+7d) | 2027-04-10 → 2027-04-15 (+5d) |  |
| 3 | **Excavation** | 2026-09-28 → 2026-10-05 (+7d) | 2026-11-12 → 2026-11-19 (+7d) |  |
| SDR-2-CON-TS-ZA-3490 | Excavation for Valve Chambers Section 1 | 2026-09-28 → 2026-10-05 (+7d) | 2026-10-20 → 2026-10-27 (+7d) | 69d → 64d |
| SDR-2-CON-TS-ZA-2560 | Excavation for Valve Chambers Section 2 | 2026-10-21 → 2026-10-28 (+7d) | 2026-11-12 → 2026-11-19 (+7d) | 69d → 64d |
| 1 | **bedding Works** | 2027-01-06 → 2027-01-12 (+6d) | 2027-01-30 → 2027-02-04 (+5d) |  |
| SDR-2-CON-TS-ZA-2550 | Sand bedding for Valve Chambers | 2027-01-06 → 2027-01-12 (+6d) | 2027-01-30 → 2027-02-04 (+5d) | 23d → 19d |
| 4 | **Install Chambers & Valves** | 2027-01-31 → 2027-02-06 (+6d) | 2027-02-24 → 2027-03-02 (+6d) |  |

| ID | Task | Start | Finish | Complete | Total float | Predecessors |
| --- | --- | --- | --- | --- | --- | --- |
| SDR-2-CON-TS-ZA-2570 | Valve Chambers & Valves Installation | 2027-01-31 → 2027-02-06 (+6d) | 2027-02-24 → 2027-03-02 (+6d) |  | 23d → 19d |  |
| 5 | **Testing** | 2027-02-25 → 2027-03-03 (+6d) | 2027-03-18 → 2027-03-24 (+6d) |  |  |  |
| SDR-2-CON-TS-ZA-2580 | Testing Chambers & Valves Installation | 2027-02-25 → 2027-03-03 (+6d) | 2027-03-18 → 2027-03-24 (+6d) |  | 23d → 19d |  |
| 6 | **Backfilling** | 2027-03-22 → 2027-03-28 (+6d) | 2027-04-10 → 2027-04-15 (+5d) |  |  |  |
| SDR-2-CON-TS-ZA-2590 | Backfilling Chambers & Valves Installation | 2027-03-22 → 2027-03-28 (+6d) | 2027-04-10 → 2027-04-15 (+5d) |  | 23d → 19d |  |
| PW | **Portable Water** |  | 2027-05-06 → 2027-05-15 (+9d) |  |  |  |
| ZA | **ZONE A** |  | 2027-05-06 → 2027-05-15 (+9d) |  |  |  |
| 1 | **PORTABLE WATER IN ( PH2-COL-MC10 )** |  | 2027-04-26 → 2027-05-03 (+7d) |  |  |  |
| 7 | **Pipes Work** |  | 2027-03-28 → 2027-04-04 (+7d) |  |  |  |
| 1 | **Excavation** |  | 2027-01-04 → 2027-01-11 (+7d) |  |  |  |
| SDR-2-CON-PW-ZA-3710 | Excavation for PW HDPE Pipes 315 mm Section 1 |  | 2026-12-07 → 2026-12-13 (+6d) |  |  | SDR-2-CON-RW-ZG-2340, SDR-2-CON-TS-ZA-1000 FF → SDR-2-CON-RW-ZG-2340 FF, SDR-2-CON-TS-ZA-1000 FF |
| SDR-2-CON-PW-ZA-1000 | Excavation for PW HDPE Pipes 315 mm Section 2 |  | 2027-01-04 → 2027-01-11 (+7d) |  | 76d → 71d |  |
| 8 | **bedding Works** |  | 2027-02-17 → 2027-02-25 (+8d) |  |  |  |
| SDR-2-CON-PW-ZA-2200 | Sand bedding for PW HDPE Pipes 315 mm |  | 2027-02-17 → 2027-02-25 (+8d) |  | 38d → 33d |  |
| 2 | **Pipes Laying** |  | 2027-02-23 → 2027-03-02 (+7d) |  |  |  |
| SDR-2-CON-PW-ZA-1010 | Install PW 315 mm HDPE Pipe |  | 2027-02-23 → 2027-03-02 (+7d) |  | 34d → 29d |  |
| 5 | **Testing** | 2027-02-24 → 2027-03-03 (+7d) | 2027-03-03 → 2027-03-15 (+12d) |  |  |  |
| SDR-2-CON-PW-ZA-1080 | Testing of PW HDPE Pipe 315 mm. | 2027-02-24 → 2027-03-03 (+7d) | 2027-03-03 → 2027-03-15 (+12d) |  | 34d → 29d |  |
| 9 | **Backfilling** | 2027-03-04 → 2027-03-16 (+12d) | 2027-03-28 → 2027-04-04 (+7d) |  |  |  |
| SDR-2-CON-PW-ZA-2210 | Backfilling of PW HDPE Pipe 315 mm. | 2027-03-04 → 2027-03-16 (+12d) | 2027-03-28 → 2027-04-04 (+7d) |  | 34d → 29d |  |
| 3 | **Valve Chambers & Valves & Fire Hydrant** | 2026-12-07 → 2026-12-13 (+6d) | 2027-04-26 → 2027-05-03 (+7d) |  |  |  |
| 3 | **Excavation** | 2026-12-07 → 2026-12-13 (+6d) | 2027-01-21 → 2027-01-27 (+6d) |  |  |  |
| SDR-2-CON-PW-ZA-3720 | Excavation for Valve Chambers Section 1 | 2026-12-07 → 2026-12-13 (+6d) | 2026-12-29 → 2027-01-04 (+6d) |  | 20d → 16d |  |
| SDR-2-CON-PW-ZA-1040 | Excavation for Valve Chambers Section 2 | 2026-12-30 → 2027-01-05 (+6d) | 2027-01-21 → 2027-01-27 (+6d) |  | 20d → 16d |  |
| 1 | **bedding Works** | 2027-01-23 → 2027-01-28 (+5d) | 2027-02-09 → 2027-02-15 (+6d) |  |  |  |
| SDR-2-CON-PW-ZA-1020 | Sand bedding for Valve Chambers | 2027-01-23 → 2027-01-28 (+5d) | 2027-02-09 → 2027-02-15 (+6d) |  | 20d → 16d |  |
| 4 | **Install Chambers & Valves & Fire Hydrant** | 2027-02-10 → 2027-02-16 (+6d) | 2027-03-06 → 2027-03-16 (+10d) |  |  |  |
| SDR-2-CON-PW-ZA-1050 | Install Chambers & Valves | 2027-02-10 → 2027-02-16 (+6d) | 2027-03-06 → 2027-03-16 (+10d) |  | 20d → 16d |  |
| 2 | **Testing** | 2027-03-24 → 2027-03-31 (+7d) | 2027-04-01 → 2027-04-08 (+7d) |  |  |  |
| SDR-2-CON-PW-ZA-1030 | Testing for Chambers & Valves | 2027-03-24 → 2027-03-31 (+7d) | 2027-04-01 → 2027-04-08 (+7d) |  | 9d → 4d |  |
| 6 | **Backfilling** | 2027-04-03 → 2027-04-10 (+7d) | 2027-04-26 → 2027-05-03 (+7d) |  |  |  |
| SDR-2-CON-PW-ZA-1070 | Backfilling for Chambers & Valves | 2027-04-03 → 2027-04-10 (+7d) | 2027-04-26 → 2027-05-03 (+7d) |  | 9d → 4d |  |
| 2 | **PORTABLE WATER IN ( PH2-COL-MC20 )** |  | 2027-04-06 → 2027-04-12 (+6d) |  |  |  |
| 7 | **Pipes Work** |  | 2027-04-05 → 2027-03-29 (-7d) |  |  |  |
| 1 | **Excavation** |  | 2026-12-30 → 2026-09-28 (-93d) |  |  |  |
| SDR-2-CON-PW-ZA-2260 | Excavation for PW HDPE Pipes 315 mm Section 2 |  | 2026-12-30 → 2026-09-28 A (-93d) | 40% → 100% | 104d → none | SDR-2-CON-PW-ZA-3730, SDR-2-CON-RW-ZG-1510, SDR-2-CON-RW-ZG-1660 FF, SDR-2-CON-ST-ZA-4130 FF, SDR-2-CON-SL-ZA-3460 FF → SDR-2-CON-PW-ZA-3730 FF, SDR-2-CON-RW-ZG-1510, SDR-2-CON-RW-ZG-1660 FF, SDR-2-CON-ST-ZA-4130 FF, SDR-2-CON-SL-ZA-3460 FF |
| SDR-2-CON-PW-ZA-3730 | Excavation for PW HDPE Pipes 315 mm Section 1 |  |  |  |  | SDR-2-CON-PW-ZA-3710 → SDR-2-CON-PW-ZA-3710 FF |
| 8 | **bedding Works** |  | 2026-12-30 → 2027-01-06 (+7d) |  |  |  |
| SDR-2-CON-PW-ZA-2340 | Sand bedding for PW HDPE Pipes 315 mm |  | 2026-12-30 → 2027-01-06 (+7d) | 30% → 35% | 104d → 99d |  |
| 2 | **Pipes Laying** |  | 2026-12-30 → 2027-01-06 (+7d) |  |  |  |
| SDR-2-CON-PW-ZA-2270 | Install PW 315 mm HDPE Pipe |  | 2026-12-30 → 2027-01-06 (+7d) |  | 104d → 99d |  |
| 5 | **Testing** |  | 2027-01-21 → 2027-01-28 (+7d) |  |  |  |
| SDR-2-CON-PW-ZA-2330 | Testing of PW HDPE Pipe 315 mm. |  | 2027-01-21 → 2027-01-28 (+7d) |  | 85d → 80d |  |
| 9 | **Backfilling** |  | 2027-04-05 → 2027-03-29 (-7d) |  |  |  |
| SDR-2-CON-PW-ZA-2350 | Backfilling of PW HDPE Pipe 315 mm. |  | 2027-04-05 → 2027-03-29 (-7d) |  | 27d → 34d |  |
| 3 | **Valve Chambers & Valves & Fire Hydrant** | 2026-12-08 → 2026-12-14 (+6d) | 2027-04-06 → 2027-04-12 (+6d) |  |  |  |
| 3 | **Excavation** | 2026-12-08 → 2026-12-14 (+6d) | 2027-01-25 → 2027-01-31 (+6d) |  |  |  |
| SDR-2-CON-PW-ZA-3740 | Excavation for Valve Chambers Section 1 | 2026-12-08 → 2026-12-14 (+6d) | 2026-12-31 → 2027-01-06 (+6d) |  | 27d → 22d |  |
| SDR-2-CON-PW-ZA-2300 | Excavation for Valve Chambers Section 2 | 2027-01-02 → 2027-01-07 (+5d) | 2027-01-25 → 2027-01-31 (+6d) |  | 27d → 22d |  |
| 1 | **bedding Works** | 2027-01-26 → 2027-02-01 (+6d) | 2027-02-11 → 2027-02-17 (+6d) |  |  |  |
| SDR-2-CON-PW-ZA-2280 | Sand bedding for Valve Chambers | 2027-01-26 → 2027-02-01 (+6d) | 2027-02-11 → 2027-02-17 (+6d) |  | 27d → 22d |  |
| 4 | **Install Chambers & Valves & Fire Hydrant** | 2027-02-13 → 2027-02-18 (+5d) | 2027-03-02 → 2027-03-08 (+6d) |  |  |  |
| SDR-2-CON-PW-ZA-2310 | Install Chambers & Valves | 2027-02-13 → 2027-02-18 (+5d) | 2027-03-02 → 2027-03-08 (+6d) |  | 27d → 22d |  |
| 2 | **Testing** | 2027-03-03 → 2027-03-14 (+11d) | 2027-03-15 → 2027-03-21 (+6d) |  |  |  |
| SDR-2-CON-PW-ZA-2290 | Testing for Chambers & Valves | 2027-03-03 → 2027-03-14 (+11d) | 2027-03-15 → 2027-03-21 (+6d) |  | 27d → 22d |  |
| 6 | **Backfilling** | 2027-03-16 → 2027-03-22 (+6d) | 2027-04-06 → 2027-04-12 (+6d) |  |  |  |
| SDR-2-CON-PW-ZA-2320 | Backfilling for Chambers & Valves | 2027-03-16 → 2027-03-22 (+6d) | 2027-04-06 → 2027-04-12 (+6d) |  | 27d → 22d |  |
| 11 | **PORTABLE WATER IN ( PH2-A-MCA0 )** | 2026-12-08 → 2026-12-14 (+6d) | 2027-04-24 → 2027-04-29 (+5d) |  |  |  |
| 7 | **Pipes Work** | 2026-12-08 → 2026-12-14 (+6d) | 2027-04-21 → 2027-04-28 (+7d) |  |  |  |
| 1 | **Excavation** | 2026-12-08 → 2026-12-14 (+6d) | 2027-01-30 → 2027-02-06 (+7d) |  |  |  |
| SDR-2-CON-PW-ZA-3750 | Excavation for PW HDPE Pipe 225 mm. Section 1 | 2026-12-08 → 2026-12-14 (+6d) | 2026-12-31 → 2027-01-06 (+6d) |  |  |  |
| SDR-2-CON-PW-ZA-1200 | Excavation for PW HDPE Pipe 225 mm. Section 2 | 2027-01-06 → 2027-01-13 (+7d) | 2027-01-30 → 2027-02-06 (+7d) |  | 4d → 9d |  |
| 3 | **bedding Works** | 2027-01-31 → 2027-02-07 (+7d) | 2027-02-23 → 2027-03-02 (+7d) |  |  |  |
| SDR-2-CON-PW-ZA-2220 | Sand bedding for PW HDPE Pipe 225 mm. | 2027-01-31 → 2027-02-07 (+7d) | 2027-02-23 → 2027-03-02 (+7d) |  | 4d → 9d |  |
| 2 | **Pipes Laying** | 2027-02-24 → 2027-03-03 (+7d) | 2027-03-20 → 2027-03-27 (+7d) |  |  |  |
| SDR-2-CON-PW-ZA-1210 | Install PW 225 mm HDPE Pipe | 2027-02-24 → 2027-03-03 (+7d) | 2027-03-20 → 2027-03-27 (+7d) |  | 4d → 9d |  |
| 5 | **Testing** | 2027-03-25 → 2027-04-01 (+7d) | 2027-04-01 → 2027-04-08 (+7d) |  |  |  |
| SDR-2-CON-PW-ZA-1280 | Testing of PW HDPE Pipe 225 mm. | 2027-03-25 → 2027-04-01 (+7d) | 2027-04-01 → 2027-04-08 (+7d) |  | 3d → 8d |  |
| 4 | **Backfilling** | 2027-04-03 → 2027-04-10 (+7d) | 2027-04-21 → 2027-04-28 (+7d) |  |  |  |
| SDR-2-CON-PW-ZA-2230 | Backfilling of PW HDPE Pipe 225 mm. | 2027-04-03 → 2027-04-10 (+7d) | 2027-04-21 → 2027-04-28 (+7d) |  | 3d → 8d |  |

| ID | Task | Start | Finish | Complete | Total float | Predecessors |
| --- | --- | --- | --- | --- | --- | --- |
| 3 | **Valve Chambers & Valves & Fire Hydrant** | 2026-12-08 → 2026-12-14 (+6d) | 2027-04-24 → 2027-04-29 (+5d) |  |  |  |
| 3 | **Excavation** | 2026-12-08 → 2026-12-14 (+6d) | 2027-01-23 → 2027-01-28 (+5d) |  |  |  |
| SDR-2-CON-PW-ZA-3760 | Excavation for Valve Chambers Section 1 | 2026-12-08 → 2026-12-14 (+6d) | 2026-12-30 → 2027-01-05 (+6d) |  | 18d → 14d |  |
| SDR-2-CON-PW-ZA-2680 | Excavation for Valve Chambers Section 2 | 2026-12-31 → 2027-01-06 (+6d) | 2027-01-23 → 2027-01-28 (+5d) |  | 18d → 14d |  |
| 1 | **bedding Works** | 2027-01-24 → 2027-01-30 (+6d) | 2027-02-15 → 2027-02-21 (+6d) |  |  |  |
| SDR-2-CON-PW-ZA-2660 | Sand bedding for Valve Chambers | 2027-01-24 → 2027-01-30 (+6d) | 2027-02-15 → 2027-02-21 (+6d) |  | 18d → 14d |  |
| 4 | **Install Chambers & Valves & Fire Hydrant** | 2027-02-16 → 2027-02-23 (+7d) | 2027-03-16 → 2027-03-22 (+6d) |  |  |  |
| SDR-2-CON-PW-ZA-2690 | Install Chambers & Valves | 2027-02-16 → 2027-02-23 (+7d) | 2027-03-16 → 2027-03-22 (+6d) |  | 18d → 14d |  |
| 2 | **Testing** | 2027-03-29 → 2027-04-04 (+6d) | 2027-04-06 → 2027-04-12 (+6d) |  |  |  |
| SDR-2-CON-PW-ZA-2670 | Testing for Chambers & Valves | 2027-03-29 → 2027-04-04 (+6d) | 2027-04-06 → 2027-04-12 (+6d) |  | 11d → 7d |  |
| 6 | **Backfilling** | 2027-04-07 → 2027-04-13 (+6d) | 2027-04-24 → 2027-04-29 (+5d) |  |  |  |
| SDR-2-CON-PW-ZA-2700 | Backfilling for Chambers & Valves | 2027-04-07 → 2027-04-13 (+6d) | 2027-04-24 → 2027-04-29 (+5d) |  | 11d → 7d |  |
| 12 | **PORTABLE WATER IN ( PH2-A-MCB0 )** | 2026-12-12 → 2026-12-17 (+5d) |  |  |  |  |
| 7 | **Pipes Work** | 2026-12-12 → 2026-12-17 (+5d) |  |  |  |  |
| 1 | **Excavation** | 2026-12-12 → 2026-12-17 (+5d) | 2027-01-28 → 2027-02-03 (+6d) |  |  |  |
| SDR-2-CON-PW-ZA-3770 | Excavation for PW HDPE Pipe 225 mm. Section 1 | 2026-12-12 → 2026-12-17 (+5d) | 2027-01-04 → 2027-01-10 (+6d) |  | 17d → 8d |  |
| SDR-2-CON-PW-ZA-2710 | Excavation for PW HDPE Pipe 225 mm. Section 2 | 2027-01-05 → 2027-01-11 (+6d) | 2027-01-28 → 2027-02-03 (+6d) |  | 17d → 19d |  |
| 3 | **bedding Works** | 2027-02-10 → 2027-02-17 (+7d) | 2027-03-07 → 2027-03-18 (+11d) |  |  |  |
| SDR-2-CON-PW-ZA-2740 | Sand bedding for PW HDPE Pipe 225 mm. | 2027-02-10 → 2027-02-17 (+7d) | 2027-03-07 → 2027-03-18 (+11d) |  | 7d → 8d |  |
| 2 | **Pipes Laying** | 2027-03-08 → 2027-03-20 (+12d) | 2027-04-04 → 2027-04-11 (+7d) |  |  |  |
| SDR-2-CON-PW-ZA-2720 | Install PW 225 mm HDPE Pipe | 2027-03-08 → 2027-03-20 (+12d) | 2027-04-04 → 2027-04-11 (+7d) |  | 7d → 8d |  |
| 5 | **Testing** | 2027-04-13 → 2027-04-20 (+7d) | 2027-04-21 → 2027-04-28 (+7d) |  |  |  |
| SDR-2-CON-PW-ZA-2730 | Testing of PW HDPE Pipe 225 mm. | 2027-04-13 → 2027-04-20 (+7d) | 2027-04-21 → 2027-04-28 (+7d) |  | 0d → 1d |  |
| SDR-2-CON-PW-ZA-2750 | Backfilling of PW HDPE Pipe 225 mm. |  |  |  | 0d → 1d | SDR-2-CON-PW-ZA-2730 → SDR-2-CON-PW-ZA-2730 SS+2d |
| 3 | **Valve Chambers & Valves & Fire Hydrant** | 2026-12-12 → 2026-12-17 (+5d) | 2027-04-13 → 2027-04-19 (+6d) |  |  |  |
| 3 | **Excavation** | 2026-12-12 → 2026-12-17 (+5d) | 2027-01-28 → 2027-02-03 (+6d) |  |  |  |
| SDR-2-CON-PW-ZA-3780 | Excavation for Valve Chambers Section 1 | 2026-12-12 → 2026-12-17 (+5d) | 2027-01-04 → 2027-01-10 (+6d) |  | 20d → 16d |  |
| SDR-2-CON-PW-ZA-2780 | Excavation for Valve Chambers Section 2 | 2027-01-05 → 2027-01-11 (+6d) | 2027-01-28 → 2027-02-03 (+6d) |  | 20d → 16d |  |
| 1 | **bedding Works** | 2027-01-30 → 2027-02-04 (+5d) | 2027-02-21 → 2027-02-28 (+7d) |  |  |  |
| SDR-2-CON-PW-ZA-2760 | Sand bedding for Valve Chambers | 2027-01-30 → 2027-02-04 (+5d) | 2027-02-21 → 2027-02-28 (+7d) |  | 20d → 16d |  |
| 4 | **Install Chambers & Valves & Fire Hydrant** | 2027-02-23 → 2027-03-01 (+6d) | 2027-03-21 → 2027-03-27 (+6d) |  |  |  |
| SDR-2-CON-PW-ZA-2790 | Install Chambers & Valves | 2027-02-23 → 2027-03-01 (+6d) | 2027-03-21 → 2027-03-27 (+6d) |  | 20d → 16d |  |
| 2 | **Testing** | 2027-03-22 → 2027-03-28 (+6d) | 2027-03-30 → 2027-04-05 (+6d) |  |  |  |
| SDR-2-CON-PW-ZA-2770 | Testing for Chambers & Valves | 2027-03-22 → 2027-03-28 (+6d) | 2027-03-30 → 2027-04-05 (+6d) |  | 20d → 16d |  |
| 6 | **Backfilling** | 2027-03-31 → 2027-04-06 (+6d) | 2027-04-13 → 2027-04-19 (+6d) |  |  |  |
| SDR-2-CON-PW-ZA-2800 | Backfilling for Chambers & Valves | 2027-03-31 → 2027-04-06 (+6d) | 2027-04-13 → 2027-04-19 (+6d) |  | 20d → 16d |  |
| 3 | **PORTABLE WATER IN ( PH2-A-MCC0 )** |  | 2027-04-14 → 2027-05-15 (+31d) |  |  |  |
| 7 | **Pipes Work** |  | 2027-04-14 → 2027-04-20 (+6d) |  |  |  |
| 1 | **Excavation** |  | 2027-01-28 → 2027-02-03 (+6d) |  |  |  |
| SDR-2-CON-PW-ZA-3790 | Excavation for PW HDPE Pipe 160 mm. Section 1 |  | 2027-01-04 → 2026-10-01 A (-95d) | 50% → 100% | 19d → none | SDR-2-CON-PW-ZA-3770 SS → SDR-2-CON-PW-ZA-3770 FF |
| SDR-2-CON-PW-ZA-1400 | Excavation for PW HDPE Pipe 160 mm. Section 2 | 2027-01-05 → 2026-10-03 A (-94d) | 2027-01-28 → 2027-02-03 (+6d) | 0% → 10% | 19d → 15d |  |
| 3 | **bedding Works** | 2027-01-30 → 2027-02-04 (+5d) | 2027-02-21 → 2027-02-28 (+7d) |  |  |  |
| SDR-2-CON-PW-ZA-2240 | Sand bedding for PW HDPE Pipe 160 mm. | 2027-01-30 → 2027-02-04 (+5d) | 2027-02-21 → 2027-02-28 (+7d) |  | 19d → 15d |  |
| 2 | **Pipes Laying** | 2027-02-23 → 2027-03-01 (+6d) | 2027-03-22 → 2027-03-28 (+6d) |  |  |  |
| SDR-2-CON-PW-ZA-1410 | Install PW 160 mm HDPE Pipe | 2027-02-23 → 2027-03-01 (+6d) | 2027-03-22 → 2027-03-28 (+6d) |  | 19d → 15d |  |
| 5 | **Testing** | 2027-03-23 → 2027-03-29 (+6d) | 2027-03-31 → 2027-04-06 (+6d) |  |  |  |
| SDR-2-CON-PW-ZA-1480 | Testing of PW HDPE Pipe 160 mm. | 2027-03-23 → 2027-03-29 (+6d) | 2027-03-31 → 2027-04-06 (+6d) |  | 19d → 15d |  |
| 4 | **Backfilling** | 2027-04-01 → 2027-04-07 (+6d) | 2027-04-14 → 2027-04-20 (+6d) |  |  |  |
| SDR-2-CON-PW-ZA-2250 | Backfilling of PW HDPE Pipe 160 mm. | 2027-04-01 → 2027-04-07 (+6d) | 2027-04-14 → 2027-04-20 (+6d) |  | 19d → 15d |  |
| 3 | **Valve Chambers & Valves & Fire Hydrant** | 2026-12-12 → 2027-01-11 (+30d) | 2027-04-14 → 2027-05-15 (+31d) |  |  |  |
| 3 | **Excavation** | 2026-12-12 → 2027-01-11 (+30d) | 2027-01-28 → 2027-03-01 (+32d) |  |  |  |
| SDR-2-CON-PW-ZA-3800 | Excavation for Valve Chambers Section 1 | 2026-12-12 → 2027-01-11 (+30d) | 2027-01-04 → 2027-02-03 (+30d) |  | 19d → 8d |  |
| SDR-2-CON-PW-ZA-3230 | Excavation for Valve Chambers Section 2 | 2027-01-05 → 2027-02-04 (+30d) | 2027-01-28 → 2027-03-01 (+32d) |  | 19d → 8d |  |
| 1 | **bedding Works** | 2027-01-30 → 2027-03-02 (+31d) | 2027-02-21 → 2027-03-29 (+36d) |  |  |  |
| SDR-2-CON-PW-ZA-3210 | Sand bedding for Valve Chambers | 2027-01-30 → 2027-03-02 (+31d) | 2027-02-21 → 2027-03-29 (+36d) |  | 19d → 8d |  |
| 4 | **Install Chambers & Valves & Fire Hydrant** | 2027-02-23 → 2027-03-30 (+35d) | 2027-03-22 → 2027-04-21 (+30d) |  |  |  |
| SDR-2-CON-PW-ZA-3240 | Install Chambers & Valves | 2027-02-23 → 2027-03-30 (+35d) | 2027-03-22 → 2027-04-21 (+30d) |  | 19d → 8d |  |
| 2 | **Testing** | 2027-03-23 → 2027-04-22 (+30d) | 2027-03-29 → 2027-04-28 (+30d) |  |  |  |
| SDR-2-CON-PW-ZA-3220 | Testing for Chambers & Valves | 2027-03-23 → 2027-04-22 (+30d) | 2027-03-29 → 2027-04-28 (+30d) |  | 19d → 8d |  |
| 6 | **Backfilling** | 2027-03-30 → 2027-04-29 (+30d) | 2027-04-14 → 2027-05-15 (+31d) |  |  |  |
| SDR-2-CON-PW-ZA-3250 | Backfilling for Chambers & Valves | 2027-03-30 → 2027-04-29 (+30d) | 2027-04-14 → 2027-05-15 (+31d) |  | 19d → 12d |  |
| 4 | **PORTABLE WATER IN ( PH2-A-MCD0 )** |  | 2027-05-04 → 2027-05-10 (+6d) |  |  |  |
| 7 | **Pipes Work** |  | 2027-04-20 → 2027-04-27 (+7d) |  |  |  |
| 1 | **Excavation** |  | 2027-02-08 → 2027-02-15 (+7d) |  |  |  |
| SDR-2-CON-PW-ZA-3810 | Excavation for PW HDPE Pipe 160 mm. Section 1 |  | 2027-01-04 → 2026-10-01 A (-95d) | 50% → 100% | 23d → none | SDR-2-CON-TS-ZA-1270 SS, SDR-2-CON-PW-ZA-3790 SS+3d, SDR-2-CON-SL-ZA-3290 → SDR-2-CON-TS-ZA-1270 SS, SDR-2-CON-PW-ZA-3790 FF, SDR-2-CON-SL-ZA-3290 |
| SDR-2-CON-PW-ZA-3260 | Excavation for PW HDPE Pipe 160 mm. Section 2 | 2027-01-16 → 2026-10-05 A (-103d) | 2027-02-08 → 2027-02-15 (+7d) | 0% → 10% | 14d → 9d |  |
| 3 | **bedding Works** | 2027-02-09 → 2027-02-16 (+7d) | 2027-03-02 → 2027-03-14 (+12d) |  |  |  |
| SDR-2-CON-PW-ZA-3290 | Sand bedding for PW HDPE Pipe 160 mm. | 2027-02-09 → 2027-02-16 (+7d) | 2027-03-02 → 2027-03-14 (+12d) |  | 14d → 9d |  |
| 2 | **Pipes Laying** | 2027-03-03 → 2027-03-15 (+12d) | 2027-03-30 → 2027-04-06 (+7d) |  |  |  |
| SDR-2-CON-PW-ZA-3270 | Install PW 160 mm HDPE Pipe | 2027-03-03 → 2027-03-15 (+12d) | 2027-03-30 → 2027-04-06 (+7d) |  | 14d → 9d |  |

| ID | Task | Start | Finish | Complete | Total float | Predecessors |
| --- | --- | --- | --- | --- | --- | --- |
| 5 | **Testing** | 2027-03-31 → 2027-04-07 (+7d) | 2027-04-08 → 2027-04-15 (+7d) |  |  |  |
| SDR-2-CON-PW-ZA-3280 | Testing of PW HDPE Pipe 160 mm. | 2027-03-31 → 2027-04-07 (+7d) | 2027-04-08 → 2027-04-15 (+7d) |  | 14d → 9d |  |
| 4 | **Backfilling** | 2027-04-10 → 2027-04-17 (+7d) | 2027-04-20 → 2027-04-27 (+7d) |  |  |  |
| SDR-2-CON-PW-ZA-3300 | Backfilling of PW HDPE Pipe 160 mm. | 2027-04-10 → 2027-04-17 (+7d) | 2027-04-20 → 2027-04-27 (+7d) |  | 14d → 9d |  |
| 3 | **Valve Chambers & Valves & Fire Hydrant** | 2026-12-12 → 2027-01-11 (+30d) | 2027-05-04 → 2027-05-10 (+6d) |  |  |  |
| 3 | **Excavation** | 2026-12-12 → 2027-01-11 (+30d) | 2027-02-23 → 2027-03-01 (+6d) |  |  |  |
| SDR-2-CON-PW-ZA-3820 | Excavation for Valve Chambers Section 1 | 2026-12-12 → 2027-01-11 (+30d) | 2027-01-04 → 2027-02-03 (+30d) |  | 23d → 8d |  |
| SDR-2-CON-PW-ZA-3330 | Excavation for Valve Chambers Section 2 | 2027-01-30 → 2027-02-04 (+5d) | 2027-02-23 → 2027-03-01 (+6d) |  | 2d → 8d | SDR-2-CON-PW-ZA-3820, SDR-2-CON-CC-ZA-1780, SDR-2-CON-CC-ZA-1660, SDR-2-CON-TE-ZA-3630 → SDR-2-CON-PW-ZA-3820, SDR-2-CON-CC-ZA-1780, SDR-2-CON-TE-ZA-3630 |
| 1 | **bedding Works** | 2027-02-24 → 2027-03-02 (+6d) | 2027-03-21 → 2027-03-27 (+6d) |  |  |  |
| SDR-2-CON-PW-ZA-3310 | Sand bedding for Valve Chambers | 2027-02-24 → 2027-03-02 (+6d) | 2027-03-21 → 2027-03-27 (+6d) |  | 2d → 8d |  |
| 4 | **Install Chambers & Valves & Fire Hydrant** | 2027-03-22 → 2027-03-28 (+6d) | 2027-04-13 → 2027-04-19 (+6d) |  |  |  |
| SDR-2-CON-PW-ZA-3340 | Install Chambers & Valves | 2027-03-22 → 2027-03-28 (+6d) | 2027-04-13 → 2027-04-19 (+6d) |  | 2d → 8d |  |
| 2 | **Testing** | 2027-04-14 → 2027-04-20 (+6d) | 2027-04-22 → 2027-04-28 (+6d) |  |  |  |
| SDR-2-CON-PW-ZA-3320 | Testing for Chambers & Valves | 2027-04-14 → 2027-04-20 (+6d) | 2027-04-22 → 2027-04-28 (+6d) |  | 2d → 8d |  |
| 6 | **Backfilling** | 2027-04-24 → 2027-04-29 (+5d) | 2027-05-04 → 2027-05-10 (+6d) |  |  |  |
| SDR-2-CON-PW-ZA-3350 | Backfilling for Chambers & Valves | 2027-04-24 → 2027-04-29 (+5d) | 2027-05-04 → 2027-05-10 (+6d) |  | 2d → 8d |  |
| 5 | **PORTABLE WATER IN ( PH2-A-MCE0 )** |  | 2027-05-06 → 2027-05-13 (+7d) |  |  |  |
| 7 | **Pipes Work** |  | 2027-01-27 → 2027-02-03 (+7d) |  |  |  |
| 1 | **Excavation** |  | 2026-11-23 → 2026-11-30 (+7d) |  |  |  |
| SDR-2-CON-PW-ZA-3360 | Excavation for PW HDPE Pipe 160 mm. Section 2 | 2026-10-31 → 2026-10-05 A (-26d) | 2026-11-23 → 2026-11-30 (+7d) | 0% → 10% | 80d → 75d |  |
| 3 | **bedding Works** | 2026-11-24 → 2026-12-01 (+7d) | 2026-12-14 → 2026-12-21 (+7d) |  |  |  |
| SDR-2-CON-PW-ZA-3390 | Sand bedding for PW HDPE Pipe 160 mm. | 2026-11-24 → 2026-12-01 (+7d) | 2026-12-14 → 2026-12-21 (+7d) |  | 80d → 75d |  |
| 2 | **Pipes Laying** | 2026-12-15 → 2026-12-22 (+7d) | 2026-12-31 → 2027-01-07 (+7d) |  |  |  |
| SDR-2-CON-PW-ZA-3370 | Install PW 160 mm HDPE Pipe | 2026-12-15 → 2026-12-22 (+7d) | 2026-12-31 → 2027-01-07 (+7d) |  | 80d → 75d |  |
| 5 | **Testing** | 2027-01-02 → 2027-01-09 (+7d) | 2027-01-10 → 2027-01-17 (+7d) |  |  |  |
| SDR-2-CON-PW-ZA-3380 | Testing of PW HDPE Pipe 160 mm. | 2027-01-02 → 2027-01-09 (+7d) | 2027-01-10 → 2027-01-17 (+7d) |  | 80d → 75d |  |
| 4 | **Backfilling** | 2027-01-11 → 2027-01-18 (+7d) | 2027-01-27 → 2027-02-03 (+7d) |  |  |  |
| SDR-2-CON-PW-ZA-3400 | Backfilling of PW HDPE Pipe 160 mm. | 2027-01-11 → 2027-01-18 (+7d) | 2027-01-27 → 2027-02-03 (+7d) |  | 80d → 75d |  |
| 3 | **Valve Chambers & Valves & Fire Hydrant** | 2026-09-28 → 2026-10-05 (+7d) | 2027-05-06 → 2027-05-13 (+7d) |  |  |  |
| 3 | **Excavation** | 2026-09-28 → 2026-10-05 (+7d) | 2027-02-23 → 2027-03-02 (+7d) |  |  |  |
| SDR-2-CON-PW-ZA-3840 | Excavation for Valve Chambers Section 1 | 2026-09-28 → 2026-10-05 (+7d) | 2026-10-20 → 2026-10-27 (+7d) |  | 87d → 100d |  |
| SDR-2-CON-PW-ZA-3430 | Excavation for Valve Chambers Section 2 | 2027-01-30 → 2027-02-06 (+7d) | 2027-02-23 → 2027-03-02 (+7d) |  | 0.81d → 13.81d |  |
| 1 | **bedding Works** | 2027-02-23 → 2027-03-02 (+7d) | 2027-03-21 → 2027-03-28 (+7d) |  |  |  |
| SDR-2-CON-PW-ZA-3410 | Sand bedding for Valve Chambers | 2027-02-23 → 2027-03-02 (+7d) | 2027-03-21 → 2027-03-28 (+7d) |  | 0.81d → 13.81d |  |
| 4 | **Install Chambers & Valves & Fire Hydrant** | 2027-03-21 → 2027-03-28 (+7d) | 2027-04-10 → 2027-04-17 (+7d) |  |  |  |
| SDR-2-CON-PW-ZA-3440 | Install Chambers & Valves | 2027-03-21 → 2027-03-28 (+7d) | 2027-04-10 → 2027-04-17 (+7d) |  | 0.81d → 13.81d |  |
| 2 | **Testing** | 2027-04-10 → 2027-04-17 (+7d) | 2027-04-19 → 2027-04-26 (+7d) |  |  |  |
| SDR-2-CON-PW-ZA-3420 | Testing for Chambers & Valves | 2027-04-10 → 2027-04-17 (+7d) | 2027-04-19 → 2027-04-26 (+7d) |  | 0.81d → 13.81d |  |
| 6 | **Backfilling** | 2027-04-19 → 2027-04-26 (+7d) | 2027-05-06 → 2027-05-13 (+7d) |  |  |  |
| SDR-2-CON-PW-ZA-3450 | Backfilling for Chambers & Valves | 2027-04-19 → 2027-04-26 (+7d) | 2027-05-06 → 2027-05-13 (+7d) |  | 0.81d → 13.81d |  |
| 6 | **PORTABLE WATER IN ( PH2-A-MCF0 )** | 2026-12-22 → 2026-12-29 (+7d) | 2027-04-20 → 2027-04-27 (+7d) |  |  |  |
| 7 | **Pipes Work** | 2026-12-22 → 2026-12-29 (+7d) | 2027-04-20 → 2027-04-27 (+7d) |  |  |  |
| 1 | **Excavation** | 2026-12-22 → 2026-12-29 (+7d) | 2027-02-08 → 2027-02-15 (+7d) |  |  |  |
| SDR-2-CON-PW-ZA-3850 | Excavation for PW HDPE Pipe 160 mm. Section 1 | 2026-12-22 → 2026-12-29 (+7d) | 2027-01-14 → 2027-01-21 (+7d) |  | 7d → 4d |  |
| SDR-2-CON-PW-ZA-3460 | Excavation for PW HDPE Pipe 160 mm. Section 2 | 2027-01-16 → 2027-01-23 (+7d) | 2027-02-08 → 2027-02-15 (+7d) |  | 14d → 9d |  |
| 3 | **bedding Works** | 2027-02-09 → 2027-02-16 (+7d) | 2027-03-02 → 2027-03-14 (+12d) |  |  |  |
| SDR-2-CON-PW-ZA-3490 | Sand bedding for PW HDPE Pipe 160 mm. | 2027-02-09 → 2027-02-16 (+7d) | 2027-03-02 → 2027-03-14 (+12d) |  | 14d → 9d |  |
| 2 | **Pipes Laying** | 2027-03-03 → 2027-03-15 (+12d) | 2027-03-30 → 2027-04-06 (+7d) |  |  |  |
| SDR-2-CON-PW-ZA-3470 | Install PW 160 mm HDPE Pipe | 2027-03-03 → 2027-03-15 (+12d) | 2027-03-30 → 2027-04-06 (+7d) |  | 14d → 9d |  |
| 5 | **Testing** | 2027-03-31 → 2027-04-07 (+7d) | 2027-04-06 → 2027-04-13 (+7d) |  |  |  |
| SDR-2-CON-PW-ZA-3480 | Testing of PW HDPE Pipe 160 mm. | 2027-03-31 → 2027-04-07 (+7d) | 2027-04-06 → 2027-04-13 (+7d) |  | 14d → 9d |  |
| 4 | **Backfilling** | 2027-04-07 → 2027-04-14 (+7d) | 2027-04-20 → 2027-04-27 (+7d) |  |  |  |
| SDR-2-CON-PW-ZA-3500 | Backfilling of PW HDPE Pipe 160 mm. | 2027-04-07 → 2027-04-14 (+7d) | 2027-04-20 → 2027-04-27 (+7d) |  | 14d → 9d |  |
| 3 | **Valve Chambers & Valves & Fire Hydrant** | 2026-12-22 → 2026-12-29 (+7d) | 2027-04-20 → 2027-04-27 (+7d) |  |  |  |
| 3 | **Excavation** | 2026-12-22 → 2026-12-29 (+7d) | 2027-02-08 → 2027-02-15 (+7d) |  |  |  |
| SDR-2-CON-PW-ZA-3860 | Excavation for Valve Chambers Section 1 | 2026-12-22 → 2026-12-29 (+7d) | 2027-01-14 → 2027-01-21 (+7d) |  | 14d → 9d |  |
| SDR-2-CON-PW-ZA-3530 | Excavation for Valve Chambers Section 2 | 2027-01-16 → 2027-01-23 (+7d) | 2027-02-08 → 2027-02-15 (+7d) |  | 14d → 9d |  |
| 1 | **bedding Works** | 2027-02-09 → 2027-02-16 (+7d) | 2027-03-02 → 2027-03-14 (+12d) |  |  |  |
| SDR-2-CON-PW-ZA-3510 | Sand bedding for Valve Chambers | 2027-02-09 → 2027-02-16 (+7d) | 2027-03-02 → 2027-03-14 (+12d) |  | 14d → 9d |  |
| 4 | **Install Chambers & Valves & Fire Hydrant** | 2027-03-03 → 2027-03-15 (+12d) | 2027-03-30 → 2027-04-06 (+7d) |  |  |  |
| SDR-2-CON-PW-ZA-3540 | Install Chambers & Valves | 2027-03-03 → 2027-03-15 (+12d) | 2027-03-30 → 2027-04-06 (+7d) |  | 14d → 9d |  |
| 2 | **Testing** | 2027-03-31 → 2027-04-07 (+7d) | 2027-04-07 → 2027-04-14 (+7d) |  |  |  |
| SDR-2-CON-PW-ZA-3520 | Testing for Chambers & Valves | 2027-03-31 → 2027-04-07 (+7d) | 2027-04-07 → 2027-04-14 (+7d) |  | 14d → 9d |  |
| 6 | **Backfilling** | 2027-04-08 → 2027-04-15 (+7d) | 2027-04-20 → 2027-04-27 (+7d) |  |  |  |
| SDR-2-CON-PW-ZA-3550 | Backfilling for Chambers & Valves | 2027-04-08 → 2027-04-15 (+7d) | 2027-04-20 → 2027-04-27 (+7d) |  | 14d → 9d |  |
| 7 | **PORTABLE WATER IN ( PH2-A-MCG0 )** | 2026-12-26 → 2027-01-02 (+7d) | 2027-05-02 → 2027-05-09 (+7d) |  |  |  |
| 7 | **Pipes Work** | 2026-12-26 → 2027-01-02 (+7d) | 2027-04-22 → 2027-04-29 (+7d) |  |  |  |
| 1 | **Excavation** | 2026-12-26 → 2027-01-02 (+7d) | 2027-02-11 → 2027-02-18 (+7d) |  |  |  |
| SDR-2-CON-PW-ZA-3870 | Excavation for PW HDPE Pipe 160 mm. Section 1 | 2026-12-26 → 2027-01-02 (+7d) | 2027-01-18 → 2027-01-25 (+7d) |  | 7d → 4d |  |
| SDR-2-CON-PW-ZA-3560 | Excavation for PW HDPE Pipe 160 mm. Section 2 | 2027-01-19 → 2027-01-26 (+7d) | 2027-02-11 → 2027-02-18 (+7d) |  | 12d → 7d |  |

| ID | Task | Start | Finish | Complete | Total float |
| --- | --- | --- | --- | --- | --- |
| 3 | **bedding Works** | 2027-02-13 → 2027-02-20 (+7d) | 2027-03-08 → 2027-03-20 (+12d) |  |  |
| SDR-2-CON-PW-ZA-3590 | Sand bedding for PW HDPE Pipe 160 mm. | 2027-02-13 → 2027-02-20 (+7d) | 2027-03-08 → 2027-03-20 (+12d) |  | 12d → 7d |
| 2 | **Pipes Laying** | 2027-03-14 → 2027-03-21 (+7d) | 2027-03-29 → 2027-04-05 (+7d) |  |  |
| SDR-2-CON-PW-ZA-3570 | Install PW 160 mm HDPE Pipe | 2027-03-14 → 2027-03-21 (+7d) | 2027-03-29 → 2027-04-05 (+7d) |  | 12d → 7d |
| 5 | **Testing** | 2027-03-30 → 2027-04-06 (+7d) | 2027-04-07 → 2027-04-14 (+7d) |  |  |
| SDR-2-CON-PW-ZA-3580 | Testing of PW HDPE Pipe 160 mm. | 2027-03-30 → 2027-04-06 (+7d) | 2027-04-07 → 2027-04-14 (+7d) |  | 12d → 7d |
| 4 | **Backfilling** | 2027-04-08 → 2027-04-15 (+7d) | 2027-04-22 → 2027-04-29 (+7d) |  |  |
| SDR-2-CON-PW-ZA-3600 | Backfilling of PW HDPE Pipe 160 mm. | 2027-04-08 → 2027-04-15 (+7d) | 2027-04-22 → 2027-04-29 (+7d) |  | 12d → 7d |
| 3 | **Valve Chambers & Valves & Fire Hydrant** | 2027-01-04 → 2027-01-11 (+7d) | 2027-05-02 → 2027-05-09 (+7d) |  |  |
| 3 | **Excavation** | 2027-01-04 → 2027-01-11 (+7d) | 2027-02-21 → 2027-03-01 (+8d) |  |  |
| SDR-2-CON-PW-ZA-3880 | Excavation for Valve Chambers Section 1 | 2027-01-04 → 2027-01-11 (+7d) | 2027-01-27 → 2027-02-03 (+7d) |  | 4d → 17d |
| SDR-2-CON-PW-ZA-3630 | Excavation for Valve Chambers Section 2 | 2027-01-28 → 2027-02-04 (+7d) | 2027-02-21 → 2027-03-01 (+8d) |  | 4d → 17d |
| 1 | **bedding Works** | 2027-02-23 → 2027-03-02 (+7d) | 2027-03-22 → 2027-03-29 (+7d) |  |  |
| SDR-2-CON-PW-ZA-3610 | Sand bedding for Valve Chambers | 2027-02-23 → 2027-03-02 (+7d) | 2027-03-22 → 2027-03-29 (+7d) |  | 4d → 17d |
| 4 | **Install Chambers & Valves & Fire Hydrant** | 2027-03-23 → 2027-03-30 (+7d) | 2027-04-11 → 2027-04-18 (+7d) |  |  |
| SDR-2-CON-PW-ZA-3640 | Install Chambers & Valves | 2027-03-23 → 2027-03-30 (+7d) | 2027-04-11 → 2027-04-18 (+7d) |  | 4d → 17d |
| 2 | **Testing** | 2027-04-12 → 2027-04-19 (+7d) | 2027-04-20 → 2027-04-27 (+7d) |  |  |
| SDR-2-CON-PW-ZA-3620 | Testing for Chambers & Valves | 2027-04-12 → 2027-04-19 (+7d) | 2027-04-20 → 2027-04-27 (+7d) |  | 4d → 17d |
| 6 | **Backfilling** | 2027-04-21 → 2027-04-28 (+7d) | 2027-05-02 → 2027-05-09 (+7d) |  |  |
| SDR-2-CON-PW-ZA-3650 | Backfilling for Chambers & Valves | 2027-04-21 → 2027-04-28 (+7d) | 2027-05-02 → 2027-05-09 (+7d) |  | 4d → 17d |
| 8 | **PORTABLE WATER IN ( PH2-A-MCH0 )** | 2026-12-29 → 2027-01-05 (+7d) | 2027-04-25 → 2027-05-02 (+7d) |  |  |
| 7 | **Pipes Work** | 2026-12-29 → 2027-01-05 (+7d) | 2027-04-25 → 2027-05-02 (+7d) |  |  |
| 1 | **Excavation** | 2026-12-29 → 2027-01-05 (+7d) | 2027-02-15 → 2027-02-23 (+8d) |  |  |
| SDR-2-CON-PW-ZA-3890 | Excavation for PW HDPE Pipe 225 mm. Section 1 | 2026-12-29 → 2027-01-05 (+7d) | 2027-01-21 → 2027-01-28 (+7d) |  | 7d → 4d |
| SDR-2-CON-PW-ZA-2810 | Excavation for PW HDPE Pipe 225 mm. Section 2 | 2027-01-23 → 2027-01-30 (+7d) | 2027-02-15 → 2027-02-23 (+8d) |  | 10d → 5d |
| 3 | **bedding Works** | 2027-02-16 → 2027-02-24 (+8d) | 2027-03-16 → 2027-03-23 (+7d) |  |  |
| SDR-2-CON-PW-ZA-2840 | Sand bedding for PW HDPE Pipe 225 mm. | 2027-02-16 → 2027-02-24 (+8d) | 2027-03-16 → 2027-03-23 (+7d) |  | 10d → 5d |
| 2 | **Pipes Laying** | 2027-03-17 → 2027-03-24 (+7d) | 2027-04-03 → 2027-04-10 (+7d) |  |  |
| SDR-2-CON-PW-ZA-2820 | Install PW 225 mm HDPE Pipe | 2027-03-17 → 2027-03-24 (+7d) | 2027-04-03 → 2027-04-10 (+7d) |  | 10d → 5d |
| 5 | **Testing** | 2027-04-04 → 2027-04-11 (+7d) | 2027-04-11 → 2027-04-18 (+7d) |  |  |
| SDR-2-CON-PW-ZA-2830 | Testing of PW HDPE Pipe 225 mm. | 2027-04-04 → 2027-04-11 (+7d) | 2027-04-11 → 2027-04-18 (+7d) |  | 10d → 5d |
| 4 | **Backfilling** | 2027-04-12 → 2027-04-19 (+7d) | 2027-04-25 → 2027-05-02 (+7d) |  |  |
| SDR-2-CON-PW-ZA-2850 | Backfilling of PW HDPE Pipe 225 mm. | 2027-04-12 → 2027-04-19 (+7d) | 2027-04-25 → 2027-05-02 (+7d) |  | 10d → 5d |
| 3 | **Valve Chambers & Valves & Fire Hydrant** | 2026-12-29 → 2027-01-05 (+7d) | 2027-04-25 → 2027-05-02 (+7d) |  |  |
| 3 | **Excavation** | 2026-12-29 → 2027-01-05 (+7d) | 2027-02-15 → 2027-02-23 (+8d) |  |  |
| SDR-2-CON-PW-ZA-3900 | Excavation for Valve Chambers Section 1 | 2026-12-29 → 2027-01-05 (+7d) | 2027-01-21 → 2027-01-28 (+7d) |  | 10d → 5d |
| SDR-2-CON-PW-ZA-2880 | Excavation for Valve Chambers Section 2 | 2027-01-23 → 2027-01-30 (+7d) | 2027-02-15 → 2027-02-23 (+8d) |  | 10d → 5d |
| 1 | **bedding Works** | 2027-02-16 → 2027-02-24 (+8d) | 2027-03-16 → 2027-03-23 (+7d) |  |  |
| SDR-2-CON-PW-ZA-2860 | Sand bedding for Valve Chambers | 2027-02-16 → 2027-02-24 (+8d) | 2027-03-16 → 2027-03-23 (+7d) |  | 10d → 5d |
| 4 | **Install Chambers & Valves & Fire Hydrant** | 2027-03-17 → 2027-03-24 (+7d) | 2027-04-03 → 2027-04-10 (+7d) |  |  |
| SDR-2-CON-PW-ZA-2890 | Install Chambers & Valves | 2027-03-17 → 2027-03-24 (+7d) | 2027-04-03 → 2027-04-10 (+7d) |  | 10d → 5d |
| 2 | **Testing** | 2027-04-04 → 2027-04-11 (+7d) | 2027-04-11 → 2027-04-18 (+7d) |  |  |
| SDR-2-CON-PW-ZA-2870 | Testing for Chambers & Valves | 2027-04-04 → 2027-04-11 (+7d) | 2027-04-11 → 2027-04-18 (+7d) |  | 10d → 5d |
| 6 | **Backfilling** | 2027-04-12 → 2027-04-19 (+7d) | 2027-04-25 → 2027-05-02 (+7d) |  |  |
| SDR-2-CON-PW-ZA-2900 | Backfilling for Chambers & Valves | 2027-04-12 → 2027-04-19 (+7d) | 2027-04-25 → 2027-05-02 (+7d) |  | 10d → 5d |
| 9 | **PORTABLE WATER IN ( PH2-ART-MC00 )** | 2027-01-02 → 2026-09-14 (-110d) | 2027-04-26 → 2027-05-03 (+7d) |  |  |
| 7 | **Pipes Work** | 2027-01-02 → 2026-09-14 (-110d) | 2027-04-26 → 2027-04-08 (-18d) |  |  |
| 1 | **Excavation** | 2027-01-02 → 2026-09-14 (-110d) | 2027-02-18 → 2027-02-01 (-17d) |  |  |
| SDR-2-CON-PW-ZA-3910 | Excavation for PW HDPE Pipes 315 mm Section 1 | 2027-01-02 → 2026-09-14 A (-110d) | 2027-01-25 → 2026-09-30 A (-117d) | 0% → 100% | 7d → none |
| SDR-2-CON-PW-ZA-2360 | Excavation for PW HDPE Pipes 315 mm Section 2 | 2027-01-26 → 2026-10-01 A (-117d) | 2027-02-18 → 2027-02-01 (-17d) | 0% → 25% | 9d → 25d |
| 8 | **bedding Works** | 2027-02-20 → 2027-02-02 (-18d) | 2027-03-20 → 2027-02-25 (-23d) |  |  |
| SDR-2-CON-PW-ZA-2440 | Sand bedding for PW HDPE Pipes 315 mm | 2027-02-20 → 2027-02-02 (-18d) | 2027-03-20 → 2027-02-25 (-23d) |  | 9d → 25d |
| 2 | **Pipes Laying** | 2027-03-21 → 2027-02-27 (-22d) | 2027-04-08 → 2027-03-22 (-17d) |  |  |
| SDR-2-CON-PW-ZA-2370 | Install PW 315 mm HDPE Pipe | 2027-03-21 → 2027-02-27 (-22d) | 2027-04-08 → 2027-03-22 (-17d) |  | 9d → 25d |
| 5 | **Testing** | 2027-04-10 → 2027-03-23 (-18d) | 2027-04-17 → 2027-03-30 (-18d) |  |  |
| SDR-2-CON-PW-ZA-2430 | Testing of PW HDPE Pipe 315 mm. | 2027-04-10 → 2027-03-23 (-18d) | 2027-04-17 → 2027-03-30 (-18d) |  | 9d → 25d |
| 9 | **Backfilling** | 2027-04-18 → 2027-03-31 (-18d) | 2027-04-26 → 2027-04-08 (-18d) |  |  |
| SDR-2-CON-PW-ZA-2450 | Backfilling of PW HDPE Pipe 315 mm. | 2027-04-18 → 2027-03-31 (-18d) | 2027-04-26 → 2027-04-08 (-18d) |  | 9d → 25d |
| 3 | **Valve Chambers & Valves & Fire Hydrant** | 2027-01-02 → 2027-01-09 (+7d) | 2027-04-26 → 2027-05-03 (+7d) |  |  |
| 3 | **Excavation** | 2027-01-02 → 2027-01-09 (+7d) | 2027-02-18 → 2027-02-27 (+9d) |  |  |
| SDR-2-CON-PW-ZA-3920 | Excavation for Valve Chambers Section 1 | 2027-01-02 → 2027-01-09 (+7d) | 2027-01-25 → 2027-02-01 (+7d) |  | 9d → 4d |
| SDR-2-CON-PW-ZA-2400 | Excavation for Valve Chambers Section 2 | 2027-01-26 → 2027-02-02 (+7d) | 2027-02-18 → 2027-02-27 (+9d) |  | 9d → 4d |
| 1 | **bedding Works** | 2027-02-20 → 2027-02-28 (+8d) | 2027-03-20 → 2027-03-27 (+7d) |  |  |
| SDR-2-CON-PW-ZA-2380 | Sand bedding for Valve Chambers | 2027-02-20 → 2027-02-28 (+8d) | 2027-03-20 → 2027-03-27 (+7d) |  | 9d → 4d |
| 4 | **Install Chambers & Valves & Fire Hydrant** | 2027-03-21 → 2027-03-28 (+7d) | 2027-04-07 → 2027-04-14 (+7d) |  |  |
| SDR-2-CON-PW-ZA-2410 | Install Chambers & Valves | 2027-03-21 → 2027-03-28 (+7d) | 2027-04-07 → 2027-04-14 (+7d) |  | 9d → 4d |
| 2 | **Testing** | 2027-04-08 → 2027-04-15 (+7d) | 2027-04-17 → 2027-04-24 (+7d) |  |  |
| SDR-2-CON-PW-ZA-2390 | Testing for Chambers & Valves | 2027-04-08 → 2027-04-15 (+7d) | 2027-04-17 → 2027-04-24 (+7d) |  | 9d → 4d |
| 6 | **Backfilling** | 2027-04-18 → 2027-04-25 (+7d) | 2027-04-26 → 2027-05-03 (+7d) |  |  |
| SDR-2-CON-PW-ZA-2420 | Backfilling for Chambers & Valves | 2027-04-18 → 2027-04-25 (+7d) | 2027-04-26 → 2027-05-03 (+7d) |  | 9d → 4d |

| ID | Task | Start | Finish | Complete | Total float | Predecessors |
| --- | --- | --- | --- | --- | --- | --- |
| 10 | **PORTABLE WATER IN ( PH2-ART-MC10 )** | 2027-01-04 → 2026-10-03 (-93d) | 2027-05-03 → 2027-05-10 (+7d) |  |  |  |
| 7 | **Pipes Work** | 2027-01-28 → 2026-10-03 (-117d) | 2027-05-03 → 2027-05-10 (+7d) |  |  |  |
| 1 | **Excavation** | 2027-01-28 → 2027-01-09 (-19d) | 2027-02-21 → 2027-02-01 (-20d) |  |  |  |
| SDR-2-CON-PW-ZA-2460 | Excavation for PW HDPE Pipes 315 mm Section 2 | 2027-01-28 → 2027-01-09 (-19d) | 2027-02-21 → 2027-02-01 (-20d) |  | 7d → 35d |  |
| SDR-2-CON-PW-ZA-3930 | Excavation for PW HDPE Pipes 315 mm Section 1 |  | 2027-01-27 → 2027-01-07 (-20d) | 25% → 35% | 7d → 25d | SDR-2-CON-PW-ZA-3910 SS+2d → SDR-2-CON-PW-ZA-3910 FF+2d |
| 8 | **bedding Works** | 2027-02-23 → 2027-02-02 (-21d) | 2027-03-22 → 2027-02-25 (-25d) |  |  |  |
| SDR-2-CON-PW-ZA-2540 | Sand bedding for PW HDPE Pipes 315 mm | 2027-02-23 → 2027-02-02 (-21d) | 2027-03-22 → 2027-02-25 (-25d) |  | 7d → 35d |  |
| 2 | **Pipes Laying** | 2027-03-23 → 2026-10-03 (-171d) | 2027-04-08 → 2027-03-20 (-19d) |  |  |  |
| SDR-2-CON-PW-ZA-2470 | Install PW 315 mm HDPE Pipe | 2027-03-23 → 2026-10-03 A (-171d) | 2027-04-08 → 2027-03-20 (-19d) | 0% → 15% | 7d → 35d |  |
| 5 | **Testing** | 2027-04-10 → 2027-03-21 (-20d) | 2027-04-17 → 2027-03-28 (-20d) |  |  |  |
| SDR-2-CON-PW-ZA-2530 | Testing of PW HDPE Pipe 315 mm. | 2027-04-10 → 2027-03-21 (-20d) | 2027-04-17 → 2027-03-28 (-20d) |  | 7d → 35d |  |
| 9 | **Backfilling** | 2027-04-22 → 2027-04-29 (+7d) | 2027-05-03 → 2027-05-10 (+7d) |  |  |  |
| SDR-2-CON-PW-ZA-2550 | Backfilling of PW HDPE Pipe 315 mm. | 2027-04-22 → 2027-04-29 (+7d) | 2027-05-03 → 2027-05-10 (+7d) |  | 3d → 16d |  |
| 3 | **Valve Chambers & Valves & Fire Hydrant** | 2027-01-04 → 2027-01-05 (+1d) | 2027-04-28 → 2027-05-01 (+3d) |  |  |  |
| 3 | **Excavation** | 2027-01-04 → 2027-01-05 (+1d) | 2027-02-21 → 2027-02-24 (+3d) |  |  |  |
| SDR-2-CON-PW-ZA-3940 | Excavation for Valve Chambers Section 1 | 2027-01-04 → 2027-01-05 (+1d) | 2027-01-27 → 2027-01-30 (+3d) |  | 7d → 6.74d |  |
| SDR-2-CON-PW-ZA-2500 | Excavation for Valve Chambers Section 2 | 2027-01-28 → 2027-01-30 (+2d) | 2027-02-21 → 2027-02-24 (+3d) |  | 7d → 6.74d |  |
| 1 | **bedding Works** | 2027-02-23 → 2027-02-24 (+1d) | 2027-03-22 → 2027-03-24 (+2d) |  |  |  |
| SDR-2-CON-PW-ZA-2480 | Sand bedding for Valve Chambers | 2027-02-23 → 2027-02-24 (+1d) | 2027-03-22 → 2027-03-24 (+2d) |  | 7d → 6.74d |  |
| 4 | **Install Chambers & Valves & Fire Hydrant** | 2027-03-23 → 2027-03-24 (+1d) | 2027-04-07 → 2027-04-10 (+3d) |  |  |  |
| SDR-2-CON-PW-ZA-2510 | Install Chambers & Valves | 2027-03-23 → 2027-03-24 (+1d) | 2027-04-07 → 2027-04-10 (+3d) |  | 7d → 6.74d |  |
| 2 | **Testing** | 2027-04-08 → 2027-04-10 (+2d) | 2027-04-17 → 2027-04-19 (+2d) |  |  |  |
| SDR-2-CON-PW-ZA-2490 | Testing for Chambers & Valves | 2027-04-08 → 2027-04-10 (+2d) | 2027-04-17 → 2027-04-19 (+2d) |  | 7d → 6.74d |  |
| 6 | **Backfilling** | 2027-04-18 → 2027-04-19 (+1d) | 2027-04-28 → 2027-05-01 (+3d) |  |  |  |
| SDR-2-CON-PW-ZA-2520 | Backfilling for Chambers & Valves | 2027-04-18 → 2027-04-19 (+1d) | 2027-04-28 → 2027-05-01 (+3d) |  | 7d → 6.74d |  |
| ZG | **ZONE G** |  | 2027-04-18 → 2027-04-25 (+7d) |  |  |  |
| 1 | **PORTABLE WATER IN ( PH2-G-MCA0 )** |  | 2027-01-17 → 2027-01-24 (+7d) |  |  |  |
| 7 | **Pipes Work** |  | 2026-10-24 → 2026-10-31 (+7d) |  |  |  |
| 3 | **bedding Works** |  | 2026-09-28 → 2026-10-05 (+7d) |  |  |  |
| SDR-2-CON-PW-ZG-1500 | Sand bedding for PW HDPE Pipes 400 mm |  | 2026-09-28 → 2026-10-05 (+7d) |  | 162d → 157d |  |
| 2 | **Pipes Laying** |  | 2026-09-28 → 2026-10-05 (+7d) |  |  |  |
| SDR-2-CON-PW-ZG-1010 | Install PW 400 mm HDPE Pipe |  | 2026-09-28 → 2026-10-05 (+7d) |  | 162d → 157d |  |
| 5 | **Testing** | 2026-09-29 → 2026-10-06 (+7d) | 2026-10-10 → 2026-10-17 (+7d) |  |  |  |
| SDR-2-CON-PW-ZG-1080 | Testing of PW HDPE Pipe 400 mm. | 2026-09-29 → 2026-10-06 (+7d) | 2026-10-10 → 2026-10-17 (+7d) |  | 162d → 157d |  |
| 4 | **Backfilling** | 2026-10-11 → 2026-10-18 (+7d) | 2026-10-24 → 2026-10-31 (+7d) |  |  |  |
| SDR-2-CON-PW-ZG-1510 | Backfilling of PW HDPE Pipe 400 mm. | 2026-10-11 → 2026-10-18 (+7d) | 2026-10-24 → 2026-10-31 (+7d) |  | 162d → 157d |  |
| 3 | **Valve Chambers & Valves & Fire Hydrant** | 2026-09-28 → 2026-10-05 (+7d) | 2027-01-17 → 2027-01-24 (+7d) |  |  |  |
| 3 | **Excavation** | 2026-09-28 → 2026-10-05 (+7d) | 2026-11-15 → 2026-11-22 (+7d) |  |  |  |
| SDR-2-CON-PW-ZA-3950 | Excavation for Valve Chambers Section 1 | 2026-09-28 → 2026-10-05 (+7d) | 2026-10-21 → 2026-10-28 (+7d) |  | 89d → 84d |  |
| SDR-2-CON-PW-ZA-3680 | Excavation for Valve Chambers Section 2 | 2026-10-22 → 2026-10-29 (+7d) | 2026-11-15 → 2026-11-22 (+7d) |  | 89d → 84d |  |
| 1 | **bedding Works** | 2026-11-16 → 2026-11-23 (+7d) | 2026-12-06 → 2026-12-13 (+7d) |  |  |  |
| SDR-2-CON-PW-ZA-3660 | Sand bedding for Valve Chambers | 2026-11-16 → 2026-11-23 (+7d) | 2026-12-06 → 2026-12-13 (+7d) |  | 89d → 84d |  |
| 4 | **Install Chambers & Valves & Fire Hydrant** | 2026-12-07 → 2026-12-14 (+7d) | 2026-12-24 → 2026-12-31 (+7d) |  |  |  |
| SDR-2-CON-PW-ZA-3690 | Install Chambers & Valves | 2026-12-07 → 2026-12-14 (+7d) | 2026-12-24 → 2026-12-31 (+7d) |  | 89d → 84d |  |
| 2 | **Testing** | 2026-12-26 → 2027-01-02 (+7d) | 2027-01-05 → 2027-01-12 (+7d) |  |  |  |
| SDR-2-CON-PW-ZA-3670 | Testing for Chambers & Valves | 2026-12-26 → 2027-01-02 (+7d) | 2027-01-05 → 2027-01-12 (+7d) |  | 89d → 84d |  |
| 6 | **Backfilling** | 2027-01-06 → 2027-01-13 (+7d) | 2027-01-17 → 2027-01-24 (+7d) |  |  |  |
| SDR-2-CON-PW-ZA-3700 | Backfilling for Chambers & Valves | 2027-01-06 → 2027-01-13 (+7d) | 2027-01-17 → 2027-01-24 (+7d) |  | 89d → 84d |  |
| 2 | **PORTABLE WATER IN ( PH2-G-MCE0 )** |  | 2027-04-18 → 2027-04-25 (+7d) |  |  |  |
| 7 | **Pipes Work** |  | 2026-10-21 → 2026-10-28 (+7d) |  |  |  |
| 3 | **bedding Works** |  | 2026-09-28 → 2026-10-05 (+7d) |  |  |  |
| SDR-2-CON-PW-ZA-2940 | Sand bedding for PW HDPE Pipe 225 mm. |  | 2026-09-28 → 2026-10-05 (+7d) |  | 164d → 159d |  |
| 2 | **Pipes Laying** |  | 2026-09-28 → 2026-10-05 (+7d) |  |  |  |
| SDR-2-CON-PW-ZA-2920 | Install PW 225 mm HDPE Pipe |  | 2026-09-28 → 2026-10-05 (+7d) |  | 164d → 159d |  |
| 5 | **Testing** | 2026-09-29 → 2026-10-06 (+7d) | 2026-10-06 → 2026-10-13 (+7d) |  |  |  |
| SDR-2-CON-PW-ZA-2930 | Testing of PW HDPE Pipe 225 mm. | 2026-09-29 → 2026-10-06 (+7d) | 2026-10-06 → 2026-10-13 (+7d) |  | 164d → 159d |  |
| 4 | **Backfilling** | 2026-10-07 → 2026-10-14 (+7d) | 2026-10-21 → 2026-10-28 (+7d) |  |  |  |
| SDR-2-CON-PW-ZA-2950 | Backfilling of PW HDPE Pipe 225 mm. | 2026-10-07 → 2026-10-14 (+7d) | 2026-10-21 → 2026-10-28 (+7d) |  | 164d → 159d |  |
| 3 | **Valve Chambers & Valves & Fire Hydrant** | 2026-12-19 → 2026-12-26 (+7d) | 2027-04-18 → 2027-04-25 (+7d) |  |  |  |
| 3 | **Excavation** | 2026-12-19 → 2026-12-26 (+7d) | 2027-02-04 → 2027-02-11 (+7d) |  |  |  |
| SDR-2-CON-PW-ZA-3970 | Excavation for Valve Chambers Section 1 | 2026-12-19 → 2026-12-26 (+7d) | 2027-01-11 → 2027-01-18 (+7d) |  | 28d → 23d |  |
| SDR-2-CON-PW-ZA-2980 | Excavation for Valve Chambers Section 2 | 2027-01-12 → 2027-01-19 (+7d) | 2027-02-04 → 2027-02-11 (+7d) |  | 28d → 23d |  |
| 1 | **bedding Works** | 2027-02-06 → 2027-02-13 (+7d) | 2027-02-27 → 2027-03-06 (+7d) |  |  |  |
| SDR-2-CON-PW-ZA-2960 | Sand bedding for Valve Chambers | 2027-02-06 → 2027-02-13 (+7d) | 2027-02-27 → 2027-03-06 (+7d) |  | 28d → 23d |  |
| 4 | **Install Chambers & Valves & Fire Hydrant** | 2027-02-28 → 2027-03-07 (+7d) | 2027-03-23 → 2027-03-30 (+7d) |  |  |  |
| SDR-2-CON-PW-ZA-2990 | Install Chambers & Valves | 2027-02-28 → 2027-03-07 (+7d) | 2027-03-23 → 2027-03-30 (+7d) |  | 28d → 23d |  |
| 2 | **Testing** | 2027-03-24 → 2027-03-31 (+7d) | 2027-04-04 → 2027-04-11 (+7d) |  |  |  |
| SDR-2-CON-PW-ZA-2970 | Testing for Chambers & Valves | 2027-03-24 → 2027-03-31 (+7d) | 2027-04-04 → 2027-04-11 (+7d) |  | 28d → 23d |  |
| 6 | **Backfilling** | 2027-04-05 → 2027-04-12 (+7d) | 2027-04-18 → 2027-04-25 (+7d) |  |  |  |
| SDR-2-CON-PW-ZA-3000 | Backfilling for Chambers & Valves | 2027-04-05 → 2027-04-12 (+7d) | 2027-04-18 → 2027-04-25 (+7d) |  | 35d → 29d |  |

| ID | Task | Start | Finish | Complete | Total float |
| --- | --- | --- | --- | --- | --- |
| 3 | **PORTABLE WATER IN ( PH2-G-MCF0 )** |  | 2027-04-06 → 2027-04-13 (+7d) |  |  |
| 7 | **Pipes Work** |  | 2026-12-29 → 2027-01-05 (+7d) |  |  |
| 3 | **bedding Works** |  | 2026-11-30 → 2026-12-07 (+7d) |  |  |
| SDR-2-CON-PW-ZA-3040 | Sand bedding for PW HDPE Pipe 225 mm. |  | 2026-11-30 → 2026-12-07 (+7d) |  | 105d → 100d |
| 5 | **Testing** | 2026-11-30 → 2026-12-07 (+7d) | 2026-12-08 → 2026-12-15 (+7d) |  |  |
| SDR-2-CON-PW-ZA-3030 | Testing of PW HDPE Pipe 225 mm. | 2026-11-30 → 2026-12-07 (+7d) | 2026-12-08 → 2026-12-15 (+7d) |  | 105d → 100d |
| 4 | **Backfilling** | 2026-12-09 → 2026-12-16 (+7d) | 2026-12-29 → 2027-01-05 (+7d) |  |  |
| SDR-2-CON-PW-ZA-3050 | Backfilling of PW HDPE Pipe 225 mm. | 2026-12-09 → 2026-12-16 (+7d) | 2026-12-29 → 2027-01-05 (+7d) |  | 105d → 100d |
| 3 | **Valve Chambers & Valves & Fire Hydrant** | 2026-11-30 → 2026-12-07 (+7d) | 2027-04-06 → 2027-04-13 (+7d) |  |  |
| 3 | **Excavation** | 2026-11-30 → 2026-12-07 (+7d) | 2027-01-17 → 2027-01-24 (+7d) |  |  |
| SDR-2-CON-PW-ZA-3990 | Excavation for Valve Chambers Section 1 | 2026-11-30 → 2026-12-07 (+7d) | 2026-12-23 → 2026-12-30 (+7d) |  | 26d → 21d |
| SDR-2-CON-PW-ZA-3080 | Excavation for Valve Chambers Section 2 | 2026-12-24 → 2026-12-31 (+7d) | 2027-01-17 → 2027-01-24 (+7d) |  | 26d → 21d |
| 1 | **bedding Works** | 2027-01-18 → 2027-01-25 (+7d) | 2027-02-09 → 2027-02-16 (+7d) |  |  |
| SDR-2-CON-PW-ZA-3060 | Sand bedding for Valve Chambers | 2027-01-18 → 2027-01-25 (+7d) | 2027-02-09 → 2027-02-16 (+7d) |  | 26d → 21d |
| 4 | **Install Chambers & Valves & Fire Hydrant** | 2027-02-10 → 2027-02-17 (+7d) | 2027-03-04 → 2027-03-16 (+12d) |  |  |
| SDR-2-CON-PW-ZA-3090 | Install Chambers & Valves | 2027-02-10 → 2027-02-17 (+7d) | 2027-03-04 → 2027-03-16 (+12d) |  | 26d → 21d |
| 2 | **Testing** | 2027-03-06 → 2027-03-17 (+11d) | 2027-03-18 → 2027-03-25 (+7d) |  |  |
| SDR-2-CON-PW-ZA-3070 | Testing for Chambers & Valves | 2027-03-06 → 2027-03-17 (+11d) | 2027-03-18 → 2027-03-25 (+7d) |  | 26d → 21d |
| 6 | **Backfilling** | 2027-03-20 → 2027-03-27 (+7d) | 2027-04-06 → 2027-04-13 (+7d) |  |  |
| SDR-2-CON-PW-ZA-3100 | Backfilling for Chambers & Valves | 2027-03-20 → 2027-03-27 (+7d) | 2027-04-06 → 2027-04-13 (+7d) |  | 26d → 21d |
| 4 | **PORTABLE WATER IN ( PH2-G-MCG0 )** |  | 2027-01-20 → 2027-01-27 (+7d) |  |  |
| 7 | **Pipes Work** |  | 2026-10-26 → 2026-11-02 (+7d) |  |  |
| 3 | **bedding Works** |  | 2026-09-28 → 2026-10-05 (+7d) |  |  |
| SDR-2-CON-PW-ZA-3140 | Sand bedding for PW HDPE Pipe 225 mm. |  | 2026-09-28 → 2026-10-05 (+7d) |  | 160d → 155d |
| 5 | **Testing** | 2026-09-28 → 2026-10-05 (+7d) | 2026-10-06 → 2026-10-13 (+7d) |  |  |
| SDR-2-CON-PW-ZA-3130 | Testing of PW HDPE Pipe 225 mm. | 2026-09-28 → 2026-10-05 (+7d) | 2026-10-06 → 2026-10-13 (+7d) |  | 160d → 155d |
| 4 | **Backfilling** | 2026-10-07 → 2026-10-14 (+7d) | 2026-10-26 → 2026-11-02 (+7d) |  |  |
| SDR-2-CON-PW-ZA-3150 | Backfilling of PW HDPE Pipe 225 mm. | 2026-10-07 → 2026-10-14 (+7d) | 2026-10-26 → 2026-11-02 (+7d) |  | 160d → 155d |
| 3 | **Valve Chambers & Valves & Fire Hydrant** | 2026-09-28 → 2026-10-05 (+7d) | 2027-01-20 → 2027-01-27 (+7d) |  |  |
| 3 | **Excavation** | 2026-09-28 → 2026-10-05 (+7d) | 2026-11-15 → 2026-11-22 (+7d) |  |  |
| SDR-2-CON-PW-ZA-4010 | Excavation for Valve Chambers Section 1 | 2026-09-28 → 2026-10-05 (+7d) | 2026-10-21 → 2026-10-28 (+7d) |  | 86d → 81d |
| SDR-2-CON-PW-ZA-3180 | Excavation for Valve Chambers Section 2 | 2026-10-22 → 2026-10-29 (+7d) | 2026-11-15 → 2026-11-22 (+7d) |  | 86d → 81d |
| 1 | **bedding Works** | 2026-11-16 → 2026-11-23 (+7d) | 2026-12-06 → 2026-12-13 (+7d) |  |  |
| SDR-2-CON-PW-ZA-3160 | Sand bedding for Valve Chambers | 2026-11-16 → 2026-11-23 (+7d) | 2026-12-06 → 2026-12-13 (+7d) |  | 86d → 81d |
| 4 | **Install Chambers & Valves & Fire Hydrant** | 2026-12-07 → 2026-12-14 (+7d) | 2026-12-22 → 2026-12-29 (+7d) |  |  |
| SDR-2-CON-PW-ZA-3190 | Install Chambers & Valves | 2026-12-07 → 2026-12-14 (+7d) | 2026-12-22 → 2026-12-29 (+7d) |  | 86d → 81d |
| 2 | **Testing** | 2026-12-23 → 2026-12-30 (+7d) | 2026-12-31 → 2027-01-07 (+7d) |  |  |
| SDR-2-CON-PW-ZA-3170 | Testing for Chambers & Valves | 2026-12-23 → 2026-12-30 (+7d) | 2026-12-31 → 2027-01-07 (+7d) |  | 86d → 81d |
| 6 | **Backfilling** | 2027-01-02 → 2027-01-09 (+7d) | 2027-01-20 → 2027-01-27 (+7d) |  |  |
| SDR-2-CON-PW-ZA-3200 | Backfilling for Chambers & Valves | 2027-01-02 → 2027-01-09 (+7d) | 2027-01-20 → 2027-01-27 (+7d) |  | 86d → 81d |
| 5 | **PORTABLE WATER IN ( PH2-G-MCZ0 )** |  | 2027-01-21 → 2027-01-28 (+7d) |  |  |
| 7 | **Pipes Work** |  | 2026-10-25 → 2026-11-01 (+7d) |  |  |
| 8 | **bedding Works** |  | 2026-09-28 → 2026-10-05 (+7d) |  |  |
| SDR-2-CON-PW-ZA-2640 | Sand bedding for PW HDPE Pipes 315 mm |  | 2026-09-28 → 2026-10-05 (+7d) |  | 161d → 156d |
| 2 | **Pipes Laying** |  | 2026-09-28 → 2026-10-05 (+7d) |  |  |
| SDR-2-CON-PW-ZA-2570 | Install PW 315 mm HDPE Pipe |  | 2026-09-28 → 2026-10-05 (+7d) |  | 161d → 156d |
| 5 | **Testing** | 2026-09-29 → 2026-10-06 (+7d) | 2026-10-05 → 2026-10-12 (+7d) |  |  |
| SDR-2-CON-PW-ZA-2630 | Testing of PW HDPE Pipe 315 mm. | 2026-09-29 → 2026-10-06 (+7d) | 2026-10-05 → 2026-10-12 (+7d) |  | 161d → 156d |
| 9 | **Backfilling** | 2026-10-06 → 2026-10-13 (+7d) | 2026-10-25 → 2026-11-01 (+7d) |  |  |
| SDR-2-CON-PW-ZA-2650 | Backfilling of PW HDPE Pipe 315 mm. | 2026-10-06 → 2026-10-13 (+7d) | 2026-10-25 → 2026-11-01 (+7d) |  | 161d → 156d |
| 3 | **Valve Chambers & Valves & Fire Hydrant** | 2026-09-28 → 2026-10-05 (+7d) | 2027-01-21 → 2027-01-28 (+7d) |  |  |
| 3 | **Excavation** | 2026-09-28 → 2026-10-05 (+7d) | 2026-11-15 → 2026-11-22 (+7d) |  |  |
| SDR-2-CON-PW-ZA-4030 | Excavation for Valve Chambers Section 1 | 2026-09-28 → 2026-10-05 (+7d) | 2026-10-21 → 2026-10-28 (+7d) |  | 85d → 80d |
| SDR-2-CON-PW-ZA-2600 | Excavation for Valve Chambers Section 2 | 2026-10-22 → 2026-10-29 (+7d) | 2026-11-15 → 2026-11-22 (+7d) |  | 85d → 80d |
| 1 | **bedding Works** | 2026-11-16 → 2026-11-23 (+7d) | 2026-12-07 → 2026-12-14 (+7d) |  |  |
| SDR-2-CON-PW-ZA-2580 | Sand bedding for Valve Chambers | 2026-11-16 → 2026-11-23 (+7d) | 2026-12-07 → 2026-12-14 (+7d) |  | 85d → 80d |
| 4 | **Install Chambers & Valves & Fire Hydrant** | 2026-12-08 → 2026-12-15 (+7d) | 2026-12-26 → 2027-01-02 (+7d) |  |  |
| SDR-2-CON-PW-ZA-2610 | Install Chambers & Valves | 2026-12-08 → 2026-12-15 (+7d) | 2026-12-26 → 2027-01-02 (+7d) |  | 85d → 80d |
| 2 | **Testing** | 2026-12-27 → 2027-01-03 (+7d) | 2027-01-02 → 2027-01-09 (+7d) |  |  |
| SDR-2-CON-PW-ZA-2590 | Testing for Chambers & Valves | 2026-12-27 → 2027-01-03 (+7d) | 2027-01-02 → 2027-01-09 (+7d) |  | 85d → 80d |
| 6 | **Backfilling** | 2027-01-03 → 2027-01-10 (+7d) | 2027-01-21 → 2027-01-28 (+7d) |  |  |
| SDR-2-CON-PW-ZA-2620 | Backfilling for Chambers & Valves | 2027-01-03 → 2027-01-10 (+7d) | 2027-01-21 → 2027-01-28 (+7d) |  | 85d → 80d |
| EW | **Electrical Works** |  | 2027-02-17 → 2027-02-25 (+8d) |  |  |
| ZA | **ZONE A** |  | 2027-02-17 → 2027-02-25 (+8d) |  |  |
| 1 | **Street Lighting Network** |  | 2027-02-17 → 2027-02-25 (+8d) |  |  |
| 16 | **Street Lighting Network IN ( PH2-COL-MC10 )** |  | 2027-02-10 → 2027-02-17 (+7d) |  |  |
| 10 | **Excavation** |  | 2026-09-28 → 2026-10-05 (+7d) |  |  |
| SDR-2-CON-SL-ZA-3590 | Excavation for LV Cable Drawpits |  | 2026-09-28 A | 80% → 100% | 7d → none |
| SDR-2-CON-SL-ZA-1000 | Excavation for LV Cable Trenches |  | 2026-09-28 → 2026-10-05 (+7d) |  | 7d → 4d |
| 11 | **Install Footings** |  | 2026-12-06 → 2026-12-13 (+7d) |  |  |

| ID | Task | Start | Finish | Complete | Total float |
| --- | --- | --- | --- | --- | --- |
| SDR-2-CON-SL-ZA-1010 | Install Footings |  | 2026-12-06 → 2026-12-13 (+7d) |  | 14d → 8d |
| 12 | **Backfilling** | 2026-12-07 → 2026-12-14 (+7d) | 2026-12-30 → 2027-01-06 (+7d) |  |  |
| SDR-2-CON-SL-ZA-1110 | Backfilling over LV Cables of Street lighting | 2026-12-07 → 2026-12-14 (+7d) | 2026-12-30 → 2027-01-06 (+7d) |  | 14d → 8d |
| 13 | **Install pole** | 2027-01-18 → 2027-01-25 (+7d) | 2027-02-10 → 2027-02-17 (+7d) |  |  |
| SDR-2-CON-SL-ZA-1100 | Install Pole | 2027-01-18 → 2027-01-25 (+7d) | 2027-02-10 → 2027-02-17 (+7d) |  | 14d → 8d |
| 17 | **Street Lighting Network IN ( PH2-COL-MC20 )** |  | 2026-12-26 → 2027-01-02 (+7d) |  |  |
| 10 | **Excavation** |  | 2026-09-28 → 2026-10-05 (+7d) |  |  |
| SDR-2-CON-SL-ZA-3600 | Excavation for LV Cable Drawpits |  | 2026-09-28 A | 70% → 100% | 28d → none |
| SDR-2-CON-SL-ZA-2870 | Excavation for LV Cable Trenches |  | 2026-09-28 → 2026-10-05 (+7d) |  | 73d → 67d |
| 11 | **Install Footings** |  | 2026-10-04 → 2026-10-11 (+7d) |  |  |
| SDR-2-CON-SL-ZA-2880 | Install Footings |  | 2026-10-04 → 2026-10-11 (+7d) |  | 68d → 62d |
| 12 | **Backfilling** | 2026-10-05 → 2026-10-12 (+7d) | 2026-10-28 → 2026-11-04 (+7d) |  |  |
| SDR-2-CON-SL-ZA-2900 | Backfilling over LV Cables of Street lighting | 2026-10-05 → 2026-10-12 (+7d) | 2026-10-28 → 2026-11-04 (+7d) |  | 68d → 62d |
| 13 | **Install pole** | 2026-12-02 → 2026-12-09 (+7d) | 2026-12-26 → 2027-01-02 (+7d) |  |  |
| SDR-2-CON-SL-ZA-2890 | Install Pole | 2026-12-02 → 2026-12-09 (+7d) | 2026-12-26 → 2027-01-02 (+7d) |  | 54d → 48d |
| 18 | **Street Lighting Network IN ( PH2-A-MCA0 )** |  | 2026-12-12 → 2026-12-19 (+7d) |  |  |
| 10 | **Excavation** |  | 2026-09-28 → 2026-10-05 (+7d) |  |  |
| SDR-2-CON-SL-ZA-3610 | Excavation for LV Cable Drawpits |  | 2026-09-28 → 2026-10-05 (+7d) |  | 28d → 23d |
| SDR-2-CON-SL-ZA-1300 | Excavation for LV Cable Trenches |  | 2026-09-28 → 2026-10-05 (+7d) |  | 51d → 66d |
| 11 | **Install Footings** |  | 2026-10-31 → 2026-11-07 (+7d) |  |  |
| SDR-2-CON-SL-ZA-1310 | Install Footings |  | 2026-10-31 → 2026-11-07 (+7d) |  | 23d → 38d |
| 12 | **Backfilling** | 2026-10-25 → 2026-11-01 (+7d) | 2026-11-17 → 2026-11-24 (+7d) |  |  |
| SDR-2-CON-SL-ZA-1410 | Backfilling over LV Cables of Street lighting | 2026-10-25 → 2026-11-01 (+7d) | 2026-11-17 → 2026-11-24 (+7d) |  | 23d → 38d |
| 13 | **Install pole** | 2026-11-18 → 2026-11-25 (+7d) | 2026-12-12 → 2026-12-19 (+7d) |  |  |
| SDR-2-CON-SL-ZA-1400 | Install Pole | 2026-11-18 → 2026-11-25 (+7d) | 2026-12-12 → 2026-12-19 (+7d) |  | 23d → 38d |
| 19 | **Street Lighting Network IN ( PH2-A-MCB0 )** |  | 2026-11-30 → 2026-12-07 (+7d) |  |  |
| 10 | **Excavation** |  | 2026-09-28 → 2026-10-05 (+7d) |  |  |
| SDR-2-CON-SL-ZA-3620 | Excavation for LV Cable Drawpits |  | 2026-09-28 → 2026-10-05 (+7d) | 65% → 70% | 28d → 23d |
| SDR-2-CON-SL-ZA-2950 | Excavation for LV Cable Trenches |  | 2026-09-28 → 2026-10-05 (+7d) |  | 28d → 23d |
| 11 | **Install Footings** |  | 2026-09-30 → 2026-10-07 (+7d) |  |  |
| SDR-2-CON-SL-ZA-2960 | Install Footings |  | 2026-09-30 → 2026-10-07 (+7d) |  | 26d → 21d |
| 12 | **Backfilling** | 2026-10-01 → 2026-10-08 (+7d) | 2026-10-25 → 2026-11-01 (+7d) |  |  |
| SDR-2-CON-SL-ZA-2980 | Backfilling over LV Cables of Street lighting | 2026-10-01 → 2026-10-08 (+7d) | 2026-10-25 → 2026-11-01 (+7d) |  | 26d → 21d |
| 13 | **Install pole** | 2026-11-07 → 2026-11-14 (+7d) | 2026-11-30 → 2026-12-07 (+7d) |  |  |
| SDR-2-CON-SL-ZA-2970 | Install Pole | 2026-11-07 → 2026-11-14 (+7d) | 2026-11-30 → 2026-12-07 (+7d) |  | 26d → 21d |
| 20 | **Street Lighting Network IN ( PH2-A-MCC0 )** |  | 2026-12-09 → 2026-12-16 (+7d) |  |  |
| 10 | **Excavation** |  | 2026-09-28 → 2026-10-05 (+7d) |  |  |
| SDR-2-CON-SL-ZA-3630 | Excavation for LV Cable Drawpits |  | 2026-09-28 → 2026-10-05 (+7d) |  | 45d → 40d |
| SDR-2-CON-SL-ZA-2990 | Excavation for LV Cable Trenches |  | 2026-09-28 → 2026-10-05 (+7d) |  | 71d → 66d |
| 11 | **Install Footings** |  | 2026-10-04 → 2026-10-11 (+7d) |  |  |
| SDR-2-CON-SL-ZA-3000 | Install Footings |  | 2026-10-04 → 2026-10-11 (+7d) |  | 66d → 61d |
| 12 | **Backfilling** | 2026-10-05 → 2026-10-12 (+7d) | 2026-10-28 → 2026-11-04 (+7d) |  |  |
| SDR-2-CON-SL-ZA-3020 | Backfilling over LV Cables of Street lighting | 2026-10-05 → 2026-10-12 (+7d) | 2026-10-28 → 2026-11-04 (+7d) |  | 66d → 61d |
| 13 | **Install pole** | 2026-11-16 → 2026-11-23 (+7d) | 2026-12-09 → 2026-12-16 (+7d) |  |  |
| SDR-2-CON-SL-ZA-3010 | Install Pole | 2026-11-16 → 2026-11-23 (+7d) | 2026-12-09 → 2026-12-16 (+7d) |  | 66d → 61d |
| 21 | **Street Lighting Network IN ( PH2-A-MCD0 )** |  | 2027-02-17 → 2027-02-25 (+8d) |  |  |
| 10 | **Excavation** |  | 2026-09-28 → 2026-10-05 (+7d) |  |  |
| SDR-2-CON-SL-ZA-3640 | Excavation for LV Cable Drawpits |  | 2026-09-28 → 2026-10-05 (+7d) | 70% → 75% | 45d → 40d |
| SDR-2-CON-SL-ZA-3030 | Excavation for LV Cable Trenches |  | 2026-09-28 → 2026-10-05 (+7d) |  | 92d → 87d |
| 11 | **Install Footings** |  | 2026-10-04 → 2026-10-11 (+7d) |  |  |
| SDR-2-CON-SL-ZA-3040 | Install Footings |  | 2026-10-04 → 2026-10-11 (+7d) |  | 87d → 82d |
| 12 | **Backfilling** | 2026-10-05 → 2026-10-12 (+7d) | 2026-10-28 → 2026-11-04 (+7d) |  |  |
| SDR-2-CON-SL-ZA-3060 | Backfilling over LV Cables of Street lighting | 2026-10-05 → 2026-10-12 (+7d) | 2026-10-28 → 2026-11-04 (+7d) |  | 87d → 82d |
| 13 | **Install pole** | 2027-01-25 → 2027-02-01 (+7d) | 2027-02-17 → 2027-02-25 (+8d) |  |  |
| SDR-2-CON-SL-ZA-3050 | Install Pole | 2027-01-25 → 2027-02-01 (+7d) | 2027-02-17 → 2027-02-25 (+8d) |  | 27d → 22d |
| 22 | **Street Lighting Network IN ( PH2-A-MCE0 )** |  | 2026-12-07 → 2026-12-14 (+7d) |  |  |
| 10 | **Excavation** |  | 2026-09-28 → 2026-10-05 (+7d) |  |  |
| SDR-2-CON-SL-ZA-3650 | Excavation for LV Cable Drawpits |  | 2026-09-28 → 2026-10-05 (+7d) |  | 45d → 40d |
| SDR-2-CON-SL-ZA-3070 | Excavation for LV Cable Trenches |  | 2026-09-28 → 2026-10-05 (+7d) |  | 48d → 107d |
| 11 | **Install Footings** |  | 2026-10-04 → 2026-10-11 (+7d) |  |  |
| SDR-2-CON-SL-ZA-3080 | Install Footings |  | 2026-10-04 → 2026-10-11 (+7d) |  | 43d → 102d |
| 12 | **Backfilling** | 2026-10-05 → 2026-10-12 (+7d) | 2026-10-28 → 2026-11-04 (+7d) |  |  |
| SDR-2-CON-SL-ZA-3100 | Backfilling over LV Cables of Street lighting | 2026-10-05 → 2026-10-12 (+7d) | 2026-10-28 → 2026-11-04 (+7d) |  | 43d → 102d |
| 13 | **Install pole** | 2026-11-16 → 2026-11-23 (+7d) | 2026-12-07 → 2026-12-14 (+7d) |  |  |
| SDR-2-CON-SL-ZA-3090 | Install Pole | 2026-11-16 → 2026-11-23 (+7d) | 2026-12-07 → 2026-12-14 (+7d) |  | 43d → 102d |
| 23 | **Street Lighting Network IN ( PH2-A-MCF0 )** |  | 2026-12-12 → 2026-12-19 (+7d) |  |  |
| 10 | **Excavation** |  | 2026-10-07 → 2026-10-14 (+7d) |  |  |
| SDR-2-CON-SL-ZA-3660 | Excavation for LV Cable Drawpits |  | 2026-10-07 → 2026-10-14 (+7d) |  | 37d → 32d |
| SDR-2-CON-SL-ZA-3110 | Excavation for LV Cable Trenches |  | 2026-10-07 → 2026-10-14 (+7d) |  | 37d → 32d |
| 11 | **Install Footings** |  | 2026-10-07 → 2026-10-14 (+7d) |  |  |

| ID | Task | Start | Finish | Total float |
| --- | --- | --- | --- | --- |
| SDR-2-CON-SL-ZA-3120 | Install Footings |  | 2026-10-07 → 2026-10-14 (+7d) | 37d → 32d |
| 12 | **Backfilling** | 2026-10-08 → 2026-10-15 (+7d) | 2026-10-31 → 2026-11-07 (+7d) |  |
| SDR-2-CON-SL-ZA-3140 | Backfilling over LV Cables of Street lighting | 2026-10-08 → 2026-10-15 (+7d) | 2026-10-31 → 2026-11-07 (+7d) | 37d → 32d |
| 13 | **Install pole** | 2026-11-18 → 2026-11-25 (+7d) | 2026-12-12 → 2026-12-19 (+7d) |  |
| SDR-2-CON-SL-ZA-3130 | Install Pole | 2026-11-18 → 2026-11-25 (+7d) | 2026-12-12 → 2026-12-19 (+7d) | 37d → 32d |
| 24 | **Street Lighting Network IN ( PH2-A-MCG0 )** |  | 2026-11-30 → 2026-12-07 (+7d) |  |
| 10 | **Excavation** |  | 2026-10-07 → 2026-10-14 (+7d) |  |
| SDR-2-CON-SL-ZA-3670 | Excavation for LV Cable Drawpits |  | 2026-10-07 → 2026-10-14 (+7d) | 48d → 43d |
| SDR-2-CON-SL-ZA-3150 | Excavation for LV Cable Trenches |  | 2026-10-07 → 2026-10-14 (+7d) | 49d → 108d |
| 11 | **Install Footings** |  | 2026-10-07 → 2026-10-14 (+7d) |  |
| SDR-2-CON-SL-ZA-3160 | Install Footings |  | 2026-10-07 → 2026-10-14 (+7d) | 49d → 108d |
| 12 | **Backfilling** | 2026-10-08 → 2026-10-15 (+7d) | 2026-10-29 → 2026-11-05 (+7d) |  |
| SDR-2-CON-SL-ZA-3180 | Backfilling over LV Cables of Street lighting | 2026-10-08 → 2026-10-15 (+7d) | 2026-10-29 → 2026-11-05 (+7d) | 49d → 108d |
| 13 | **Install pole** | 2026-11-17 → 2026-11-24 (+7d) | 2026-11-30 → 2026-12-07 (+7d) |  |
| SDR-2-CON-SL-ZA-3170 | Install Pole | 2026-11-17 → 2026-11-24 (+7d) | 2026-11-30 → 2026-12-07 (+7d) | 49d → 108d |
| 25 | **Street Lighting Network IN ( PH2-A-MCH0 )** |  | 2026-12-06 → 2026-12-13 (+7d) |  |
| 10 | **Excavation** |  | 2026-10-07 → 2026-10-14 (+7d) |  |
| SDR-2-CON-SL-ZA-3680 | Excavation for LV Cable Drawpits |  | 2026-10-07 → 2026-10-14 (+7d) | 48d → 43d |
| SDR-2-CON-SL-ZA-3190 | Excavation for LV Cable Trenches |  | 2026-10-07 → 2026-10-14 (+7d) | 48d → 43d |
| 11 | **Install Footings** |  | 2026-10-07 → 2026-10-14 (+7d) |  |
| SDR-2-CON-SL-ZA-3200 | Install Footings |  | 2026-10-07 → 2026-10-14 (+7d) | 48d → 43d |
| 12 | **Backfilling** | 2026-10-08 → 2026-10-15 (+7d) | 2026-10-29 → 2026-11-05 (+7d) |  |
| SDR-2-CON-SL-ZA-3220 | Backfilling over LV Cables of Street lighting | 2026-10-08 → 2026-10-15 (+7d) | 2026-10-29 → 2026-11-05 (+7d) | 48d → 43d |
| 13 | **Install pole** | 2026-11-17 → 2026-11-24 (+7d) | 2026-12-06 → 2026-12-13 (+7d) |  |
| SDR-2-CON-SL-ZA-3210 | Install Pole | 2026-11-17 → 2026-11-24 (+7d) | 2026-12-06 → 2026-12-13 (+7d) | 48d → 43d |
| 27 | **Street Lighting Network IN ( PH2-ART-MC10 )** |  | 2026-12-10 → 2026-12-17 (+7d) |  |
| 10 | **Excavation** |  | 2026-10-07 → 2026-10-14 (+7d) |  |
| SDR-2-CON-SL-ZA-3690 | Excavation for LV Cable Drawpits |  | 2026-10-07 → 2026-10-14 (+7d) |  |
| SDR-2-CON-SL-ZA-2910 | Excavation for LV Cable Trenches |  | 2026-10-07 → 2026-10-14 (+7d) | 58d → 53d |
| 11 | **Install Footings** |  | 2026-10-07 → 2026-10-14 (+7d) |  |
| SDR-2-CON-SL-ZA-2920 | Install Footings |  | 2026-10-07 → 2026-10-14 (+7d) | 58d → 53d |
| 12 | **Backfilling** | 2026-10-08 → 2026-10-15 (+7d) | 2026-11-01 → 2026-11-08 (+7d) |  |
| SDR-2-CON-SL-ZA-2940 | Backfilling over LV Cables of Street lighting | 2026-10-08 → 2026-10-15 (+7d) | 2026-11-01 → 2026-11-08 (+7d) | 58d → 53d |
| 13 | **Install pole** | 2026-11-17 → 2026-11-24 (+7d) | 2026-12-10 → 2026-12-17 (+7d) |  |
| SDR-2-CON-SL-ZA-2930 | Install Pole | 2026-11-17 → 2026-11-24 (+7d) | 2026-12-10 → 2026-12-17 (+7d) | 109d → 103d |
| 10 | **Lighting Pole Panels** | 2026-10-08 → 2026-10-15 (+7d) | 2027-01-26 → 2027-02-02 (+7d) |  |
| 1 | **Excavation** | 2026-10-08 → 2026-10-15 (+7d) | 2026-11-01 → 2026-11-08 (+7d) |  |
| SDR-2-CON-SL-ZA-2650 | Street Lighting Panels Excavation | 2026-10-08 → 2026-10-15 (+7d) | 2026-11-01 → 2026-11-08 (+7d) |  |
| 2 | **Install Footings** | 2026-11-02 → 2026-11-09 (+7d) | 2026-11-24 → 2026-12-01 (+7d) |  |
| SDR-2-CON-SL-ZA-2760 | Installation Footings Street Lighting Panels | 2026-11-02 → 2026-11-09 (+7d) | 2026-11-24 → 2026-12-01 (+7d) | 69d → 63d |
| 3 | **Backfilling** | 2026-11-25 → 2026-12-02 (+7d) | 2026-12-15 → 2026-12-22 (+7d) |  |
| SDR-2-CON-SL-ZA-2770 | Street Lighting Panels Backfilling | 2026-11-25 → 2026-12-02 (+7d) | 2026-12-15 → 2026-12-22 (+7d) | 69d → 63d |
| 4 | **Install pole** | 2027-01-03 → 2027-01-10 (+7d) | 2027-01-26 → 2027-02-02 (+7d) |  |
| SDR-2-CON-SL-ZA-2780 | Street Lighting Panels Installation | 2027-01-03 → 2027-01-10 (+7d) | 2027-01-26 → 2027-02-02 (+7d) | 69d → 63d |
| 11 | **Ring Main Unit** | 2026-10-08 → 2026-10-15 (+7d) | 2026-12-28 → 2027-01-04 (+7d) |  |
| 1 | **Leveling** | 2026-10-08 → 2026-10-15 (+7d) | 2026-10-31 → 2026-11-07 (+7d) |  |
| SDR-2-CON-SL-ZA-2660 | Ring Main Unit leveling | 2026-10-08 → 2026-10-15 (+7d) | 2026-10-31 → 2026-11-07 (+7d) |  |
| 2 | **Lean Concrete** | 2026-11-01 → 2026-11-08 (+7d) | 2026-11-23 → 2026-11-30 (+7d) |  |
| SDR-2-CON-SL-ZA-2790 | Ring Main Unit Lean Concrete | 2026-11-01 → 2026-11-08 (+7d) | 2026-11-23 → 2026-11-30 (+7d) | 57d → 51d |
| 3 | **Installation** | 2026-12-06 → 2026-12-13 (+7d) | 2026-12-28 → 2027-01-04 (+7d) |  |
| SDR-2-CON-SL-ZA-2800 | Ring Main Unit installation for Street Lighting | 2026-12-06 → 2026-12-13 (+7d) | 2026-12-28 → 2027-01-04 (+7d) | 57d → 51d |
| 12 | **Feeder Pillars** | 2026-10-25 → 2026-11-01 (+7d) | 2027-01-19 → 2027-01-26 (+7d) |  |
| 1 | **Leveling** | 2026-10-25 → 2026-11-01 (+7d) | 2026-11-16 → 2026-11-23 (+7d) |  |
| SDR-2-CON-SL-ZA-2670 | Feeder Pillars Leveling | 2026-10-25 → 2026-11-01 (+7d) | 2026-11-16 → 2026-11-23 (+7d) | 42d → 36d |
| 2 | **Lean Concrete** | 2026-11-17 → 2026-11-24 (+7d) | 2026-12-09 → 2026-12-16 (+7d) |  |
| SDR-2-CON-SL-ZA-2810 | Feeder Pillars Lean Concrete | 2026-11-17 → 2026-11-24 (+7d) | 2026-12-09 → 2026-12-16 (+7d) | 55d → 49d |
| 3 | **Installation** | 2026-12-28 → 2027-01-04 (+7d) | 2027-01-19 → 2027-01-26 (+7d) |  |
| SDR-2-CON-SL-ZA-2820 | Feeder Pillars Installation | 2026-12-28 → 2027-01-04 (+7d) | 2027-01-19 → 2027-01-26 (+7d) | 55d → 49d |
| 13 | **KWH Frame** | 2026-11-28 → 2026-12-05 (+7d) | 2027-02-04 → 2027-02-11 (+7d) |  |
| 1 | **Leveling** | 2026-11-28 → 2026-12-05 (+7d) | 2026-12-20 → 2026-12-27 (+7d) |  |
| SDR-2-CON-SL-ZA-2680 | KWH meter mounting frame Leveling | 2026-11-28 → 2026-12-05 (+7d) | 2026-12-20 → 2026-12-27 (+7d) | 14d → 8d |
| 2 | **Lean Concrete** | 2026-12-21 → 2026-12-28 (+7d) | 2027-01-12 → 2027-01-19 (+7d) |  |
| SDR-2-CON-SL-ZA-2830 | KWH meter mounting frame Lean Concrete | 2026-12-21 → 2026-12-28 (+7d) | 2027-01-12 → 2027-01-19 (+7d) | 24d → 18d |
| 3 | **Installation** | 2027-01-13 → 2027-01-20 (+7d) | 2027-02-04 → 2027-02-11 (+7d) |  |
| SDR-2-CON-SL-ZA-2840 | KWH meter mounting frame installation | 2027-01-13 → 2027-01-20 (+7d) | 2027-02-04 → 2027-02-11 (+7d) | 24d → 18d |
| 14 | **Street Lighting Sub-station** | 2026-11-29 → 2026-12-06 (+7d) | 2027-02-07 → 2027-02-14 (+7d) |  |
| 1 | **Leveling** | 2026-11-29 → 2026-12-06 (+7d) | 2026-12-21 → 2026-12-28 (+7d) |  |
| SDR-2-CON-SL-ZA-2690 | Unit Substation Leveling | 2026-11-29 → 2026-12-06 (+7d) | 2026-12-21 → 2026-12-28 (+7d) | 14d → 8d |
| 2 | **Lean Concrete** | 2026-12-22 → 2026-12-29 (+7d) | 2027-01-13 → 2027-01-20 (+7d) |  |
| SDR-2-CON-SL-ZA-2850 | Unit Substation Lean Concrete | 2026-12-22 → 2026-12-29 (+7d) | 2027-01-13 → 2027-01-20 (+7d) | 22d → 16d |

| ID | Task | Start | Finish | Complete | Total float |
| --- | --- | --- | --- | --- | --- |
| 3 | **Installation** | 2027-01-14 → 2027-01-21 (+7d) | 2027-02-07 → 2027-02-14 (+7d) |  |  |
| SDR-2-CON-SL-ZA-2860 | Unit Substation Install for Street Lighting | 2027-01-14 → 2027-01-21 (+7d) | 2027-02-07 → 2027-02-14 (+7d) |  | 22d → 16d |
| 2 | **MV Network** |  | 2026-12-02 → 2026-12-09 (+7d) |  |  |
| 1 | **LOOP 3** |  | 2026-11-01 → 2026-11-08 (+7d) |  |  |
| 6 | **Excavation** |  | 2026-09-28 → 2026-10-05 (+7d) |  |  |
| SDR-2-CON-MV-ZA-1000 | Excavation Works |  | 2026-09-28 → 2026-10-05 (+7d) |  | 20d → 25d |
| 7 | **Pipe laying** |  | 2026-09-28 → 2026-10-05 (+7d) |  |  |
| SDR-2-CON-MV-ZA-1070 | Pipe Laying |  | 2026-09-28 → 2026-10-05 (+7d) |  | 33d → 30d |
| 8 | **Backfilling** |  | 2026-09-28 → 2026-10-05 (+7d) |  |  |
| SDR-2-CON-MV-ZA-1150 | Backfilling Works |  | 2026-09-28 → 2026-10-05 (+7d) |  | 33d → 30d |
| 9 | **Pulling Cable** | 2026-10-08 → 2026-10-15 (+7d) | 2026-11-01 → 2026-11-08 (+7d) |  |  |
| SDR-2-CON-MV-ZA-1100 | Pulling Cable | 2026-10-08 → 2026-10-15 (+7d) | 2026-11-01 → 2026-11-08 (+7d) |  | 25d → 22d |
| 2 | **LOOP 4** |  | 2026-12-02 → 2026-12-09 (+7d) |  |  |
| 6 | **Excavation** |  | 2026-09-28 → 2026-10-05 (+7d) |  |  |
| SDR-2-CON-MV-ZA-1160 | Excavation Works |  | 2026-09-28 → 2026-10-05 (+7d) |  | 31d → 26d |
| 7 | **Pipe laying** |  | 2026-09-28 → 2026-10-05 (+7d) |  |  |
| SDR-2-CON-MV-ZA-1170 | Pipe Laying |  | 2026-09-28 → 2026-10-05 (+7d) |  | 31d → 26d |
| 8 | **Backfilling** | 2026-09-29 → 2026-10-06 (+7d) | 2026-10-22 → 2026-10-29 (+7d) |  |  |
| SDR-2-CON-MV-ZA-1190 | Backfilling Works | 2026-09-29 → 2026-10-06 (+7d) | 2026-10-22 → 2026-10-29 (+7d) |  | 31d → 26d |
| 9 | **Pulling Cable** | 2026-11-09 → 2026-11-16 (+7d) | 2026-12-02 → 2026-12-09 (+7d) |  |  |
| SDR-2-CON-MV-ZA-1180 | Pulling Cable | 2026-11-09 → 2026-11-16 (+7d) | 2026-12-02 → 2026-12-09 (+7d) |  | 31d → 26d |
| 3 | **LOOP 5** |  | 2026-11-25 → 2026-12-02 (+7d) |  |  |
| 6 | **Excavation** |  | 2026-09-28 → 2026-10-05 (+7d) |  |  |
| SDR-2-CON-MV-ZA-1200 | Excavation Works |  | 2026-09-28 → 2026-10-05 (+7d) |  | 37d → 32d |
| 7 | **Pipe laying** |  | 2026-09-28 → 2026-10-05 (+7d) |  |  |
| SDR-2-CON-MV-ZA-1210 | Pipe Laying |  | 2026-09-28 → 2026-10-05 (+7d) |  | 37d → 32d |
| 8 | **Backfilling** | 2026-09-29 → 2026-10-06 (+7d) | 2026-10-22 → 2026-10-29 (+7d) |  |  |
| SDR-2-CON-MV-ZA-1230 | Backfilling Works | 2026-09-29 → 2026-10-06 (+7d) | 2026-10-22 → 2026-10-29 (+7d) |  | 37d → 32d |
| 9 | **Pulling Cable** | 2026-11-02 → 2026-11-09 (+7d) | 2026-11-25 → 2026-12-02 (+7d) |  |  |
| SDR-2-CON-MV-ZA-1220 | Pulling Cable | 2026-11-02 → 2026-11-09 (+7d) | 2026-11-25 → 2026-12-02 (+7d) |  | 37d → 32d |
| 4 | **LOOP 6** |  | 2026-11-25 → 2026-12-02 (+7d) |  |  |
| 6 | **Excavation** |  | 2026-09-28 → 2026-10-05 (+7d) |  |  |
| SDR-2-CON-MV-ZA-1240 | Excavation Works |  | 2026-09-28 → 2026-10-05 (+7d) |  | 42d → 37d |
| 7 | **Pipe laying** |  | 2026-09-28 → 2026-10-05 (+7d) |  |  |
| SDR-2-CON-MV-ZA-1250 | Pipe Laying |  | 2026-09-28 → 2026-10-05 (+7d) |  | 42d → 37d |
| 8 | **Backfilling** | 2026-09-29 → 2026-10-06 (+7d) | 2026-10-22 → 2026-10-29 (+7d) |  |  |
| SDR-2-CON-MV-ZA-1270 | Backfilling Works | 2026-09-29 → 2026-10-06 (+7d) | 2026-10-22 → 2026-10-29 (+7d) |  | 42d → 37d |
| 9 | **Pulling Cable** | 2026-11-02 → 2026-11-09 (+7d) | 2026-11-25 → 2026-12-02 (+7d) |  |  |
| SDR-2-CON-MV-ZA-1260 | Pulling Cable | 2026-11-02 → 2026-11-09 (+7d) | 2026-11-25 → 2026-12-02 (+7d) |  | 40d → 35d |
| 3 | **TELECOMMUNICATIONS Works** |  | 2027-01-30 → 2027-02-06 (+7d) |  |  |
| 1 | **TELECOMMUNICATION IN ( PH2-COL-MC10 )** |  | 2027-01-25 → 2027-02-01 (+7d) |  |  |
| 3 | **Ducts** |  | 2027-01-25 → 2027-02-01 (+7d) |  |  |
| 2 | **Excavation** |  | 2026-11-07 → 2026-11-14 (+7d) |  |  |
| SDR-2-CON-TE-ZA-4560 | Excavation for telecom crossing ducts |  | 2026-10-13 → 2026-10-20 (+7d) |  | 1d → 7d |
| SDR-2-CON-TE-ZA-1000 | Excavation for telecom trenches | 2026-10-14 → 2026-10-21 (+7d) | 2026-11-07 → 2026-11-14 (+7d) |  | 1d → 14d |
| 5 | **Pipe laying** | 2026-11-08 → 2026-11-15 (+7d) | 2026-11-29 → 2026-12-06 (+7d) |  |  |
| SDR-2-CON-TE-ZA-1010 | HDPE Pipes for Telecom Installation | 2026-11-08 → 2026-11-15 (+7d) | 2026-11-29 → 2026-12-06 (+7d) |  | 1d → 14d |
| 6 | **Backfilling** | 2026-11-30 → 2026-12-07 (+7d) | 2026-12-20 → 2026-12-27 (+7d) |  |  |
| SDR-2-CON-TE-ZA-1020 | Backfilling over HDPE Telecom Pipes | 2026-11-30 → 2026-12-07 (+7d) | 2026-12-20 → 2026-12-27 (+7d) |  | 1d → 14d |
| 7 | **Pulling Cable** | 2027-01-02 → 2027-01-09 (+7d) | 2027-01-25 → 2027-02-01 (+7d) |  |  |
| SDR-2-CON-TE-ZA-1840 | Pulling Cable | 2027-01-02 → 2027-01-09 (+7d) | 2027-01-25 → 2027-02-01 (+7d) |  | 1d → 14d |
| 4 | **Manholes** |  | 2026-12-29 → 2027-01-05 (+7d) |  |  |
| 2 | **Bedding Work** |  | 2026-10-14 → 2026-10-21 (+7d) |  |  |
| SDR-2-CON-TE-ZA-1850 | Sand bedding for Telecom Manhole |  | 2026-10-14 → 2026-10-21 (+7d) |  | 11.74d → 6.74d |
| 3 | **Install Manholes** | 2026-10-14 → 2026-09-21 (-23d) | 2026-11-07 → 2026-11-14 (+7d) |  |  |
| SDR-2-CON-TE-ZA-1040 | Installation of Telecom Manhole | 2026-10-14 → 2026-09-21 A (-23d) | 2026-11-07 → 2026-11-14 (+7d) | 0% → 25% | 11.74d → 6.74d |
| 4 | **Testting** | 2026-11-07 → 2026-11-14 (+7d) | 2026-11-23 → 2026-11-30 (+7d) |  |  |
| SDR-2-CON-TE-ZA-1050 | Telecom Manhole finishing works | 2026-11-07 → 2026-11-14 (+7d) | 2026-11-23 → 2026-11-30 (+7d) |  | 11.74d → 6.74d |
| 5 | **Backfilling** | 2026-12-05 → 2026-12-12 (+7d) | 2026-12-29 → 2027-01-05 (+7d) |  |  |
| SDR-2-CON-TE-ZA-1060 | Backfilling over Telecom Manhole | 2026-12-05 → 2026-12-12 (+7d) | 2026-12-29 → 2027-01-05 (+7d) |  | 11.74d → 6.74d |
| 2 | **TELECOMMUNICATION IN ( PH2-COL-MC20 )** |  | 2026-11-25 → 2026-12-02 (+7d) |  |  |
| 3 | **Ducts** |  | 2026-10-22 → 2026-10-29 (+7d) |  |  |
| 2 | **Excavation** |  | 2026-09-28 → 2026-10-05 (+7d) |  |  |
| SDR-2-CON-TE-ZA-3210 | Excavation for telecom crossing ducts & trenches |  | 2026-09-28 → 2026-10-05 (+7d) |  | 7d → 4d |
| 5 | **Pipe laying** |  | 2026-09-28 → 2026-10-05 (+7d) |  |  |
| SDR-2-CON-TE-ZA-3220 | HDPE Pipes for Telecom Installation |  | 2026-09-28 → 2026-10-05 (+7d) |  | 114d → 108d |
| 6 | **Backfilling** |  | 2026-09-28 → 2026-10-05 (+7d) |  |  |
| SDR-2-CON-TE-ZA-3230 | Backfilling over HDPE Telecom Pipes |  | 2026-09-28 → 2026-10-05 (+7d) |  | 114d → 108d |
| 7 | **Pulling Cable** | 2026-09-29 → 2026-10-06 (+7d) | 2026-10-22 → 2026-10-29 (+7d) |  |  |
| SDR-2-CON-TE-ZA-3280 | Pulling Cable | 2026-09-29 → 2026-10-06 (+7d) | 2026-10-22 → 2026-10-29 (+7d) |  | 114d → 108d |

| ID | Task | Start | Finish | Complete | Total float |
| --- | --- | --- | --- | --- | --- |
| 4 | **Manholes** |  | 2026-11-25 → 2026-12-02 (+7d) |  |  |
| 1 | **Excavation** |  | 2026-10-04 → 2026-10-01 (-3d) |  |  |
| SDR-2-CON-TE-ZA-3240 | Excavation for Telecom Manholes |  | 2026-10-04 → 2026-10-01 A (-3d) | 95% → 100% | 29d → none |
| 2 | **Bedding Work** |  | 2026-10-04 → 2026-10-11 (+7d) |  |  |
| SDR-2-CON-TE-ZA-3290 | Sand bedding for Telecom Manhole |  | 2026-10-04 → 2026-10-11 (+7d) |  | 29d → 26d |
| 3 | **Install Manholes** |  | 2026-10-04 → 2026-10-11 (+7d) |  |  |
| SDR-2-CON-TE-ZA-3250 | Installation of Telecom Manhole |  | 2026-10-04 → 2026-10-11 (+7d) |  | 29d → 26d |
| 4 | **Testting** | 2026-10-05 → 2026-10-12 (+7d) | 2026-10-20 → 2026-10-27 (+7d) |  |  |
| SDR-2-CON-TE-ZA-3260 | Telecom Manhole finishing works | 2026-10-05 → 2026-10-12 (+7d) | 2026-10-20 → 2026-10-27 (+7d) |  | 29d → 26d |
| 5 | **Backfilling** | 2026-11-02 → 2026-11-09 (+7d) | 2026-11-25 → 2026-12-02 (+7d) |  |  |
| SDR-2-CON-TE-ZA-3270 | Backfilling over Telecom Manhole | 2026-11-02 → 2026-11-09 (+7d) | 2026-11-25 → 2026-12-02 (+7d) |  | 29d → 26d |
| 11 | **TELECOMMUNICATION IN ( PH2-A-MCA0 )** |  | 2027-01-21 → 2027-01-28 (+7d) |  |  |
| 3 | **Ducts** |  | 2026-12-17 → 2026-12-24 (+7d) |  |  |
| 2 | **Excavation** |  | 2026-09-28 → 2026-10-05 (+7d) |  |  |
| SDR-2-CON-TE-ZA-3300 | Excavation for telecom crossing ducts & trenches |  | 2026-09-28 → 2026-10-05 (+7d) |  | 7d → 4d |
| 5 | **Pipe laying** | 2026-09-29 → 2026-10-06 (+7d) | 2026-10-20 → 2026-10-27 (+7d) |  |  |
| SDR-2-CON-TE-ZA-3310 | HDPE Pipes for Telecom Installation | 2026-09-29 → 2026-10-06 (+7d) | 2026-10-20 → 2026-10-27 (+7d) |  | 10d → 7d |
| 6 | **Backfilling** | 2026-10-21 → 2026-10-28 (+7d) | 2026-11-12 → 2026-11-19 (+7d) |  |  |
| SDR-2-CON-TE-ZA-3320 | Backfilling over HDPE Telecom Pipes | 2026-10-21 → 2026-10-28 (+7d) | 2026-11-12 → 2026-11-19 (+7d) |  | 10d → 7d |
| 7 | **Pulling Cable** | 2026-11-25 → 2026-12-02 (+7d) | 2026-12-17 → 2026-12-24 (+7d) |  |  |
| SDR-2-CON-TE-ZA-3370 | Pulling Cable | 2026-11-25 → 2026-12-02 (+7d) | 2026-12-17 → 2026-12-24 (+7d) |  | 10d → 7d |
| 4 | **Manholes** |  | 2027-01-21 → 2027-01-28 (+7d) |  |  |
| 1 | **Excavation** |  | 2026-10-08 → 2026-10-15 (+7d) |  |  |
| SDR-2-CON-TE-ZA-3330 | Excavation for Telecom Manholes |  | 2026-10-08 → 2026-10-15 (+7d) |  | 7.81d → 20.81d |
| 2 | **Bedding Work** | 2026-10-08 → 2026-10-15 (+7d) | 2026-11-01 → 2026-11-08 (+7d) |  |  |
| SDR-2-CON-TE-ZA-3380 | Sand bedding for Telecom Manhole | 2026-10-08 → 2026-10-15 (+7d) | 2026-11-01 → 2026-11-08 (+7d) |  | 7.81d → 20.81d |
| 3 | **Install Manholes** | 2026-11-01 → 2026-11-08 (+7d) | 2026-11-24 → 2026-12-01 (+7d) |  |  |
| SDR-2-CON-TE-ZA-3340 | Installation of Telecom Manhole | 2026-11-01 → 2026-11-08 (+7d) | 2026-11-24 → 2026-12-01 (+7d) |  | 7.81d → 20.81d |
| 4 | **Testting** | 2026-11-24 → 2026-12-01 (+7d) | 2026-12-17 → 2026-12-24 (+7d) |  |  |
| SDR-2-CON-TE-ZA-3350 | Telecom Manhole finishing works | 2026-11-24 → 2026-12-01 (+7d) | 2026-12-17 → 2026-12-24 (+7d) |  | 7.81d → 20.81d |
| 5 | **Backfilling** | 2026-12-29 → 2027-01-05 (+7d) | 2027-01-21 → 2027-01-28 (+7d) |  |  |
| SDR-2-CON-TE-ZA-3360 | Backfilling over Telecom Manhole | 2026-12-29 → 2027-01-05 (+7d) | 2027-01-21 → 2027-01-28 (+7d) |  | 7.81d → 20.81d |
| 12 | **TELECOMMUNICATION IN ( PH2-A-MCB0 )** |  | 2027-01-30 → 2027-02-06 (+7d) |  |  |
| 3 | **Ducts** |  | 2026-12-21 → 2026-12-28 (+7d) |  |  |
| 2 | **Excavation** |  | 2026-09-28 → 2026-10-05 (+7d) |  |  |
| SDR-2-CON-TE-ZA-3390 | Excavation for telecom crossing ducts & trenches |  | 2026-09-28 → 2026-10-05 (+7d) |  | 7d → 4d |
| 5 | **Pipe laying** | 2026-09-29 → 2026-10-06 (+7d) | 2026-10-22 → 2026-10-29 (+7d) |  |  |
| SDR-2-CON-TE-ZA-3400 | HDPE Pipes for Telecom Installation | 2026-09-29 → 2026-10-06 (+7d) | 2026-10-22 → 2026-10-29 (+7d) |  | 7d → 4d |
| 6 | **Backfilling** | 2026-10-24 → 2026-10-31 (+7d) | 2026-11-15 → 2026-11-22 (+7d) |  |  |
| SDR-2-CON-TE-ZA-3410 | Backfilling over HDPE Telecom Pipes | 2026-10-24 → 2026-10-31 (+7d) | 2026-11-15 → 2026-11-22 (+7d) |  | 7d → 4d |
| 7 | **Pulling Cable** | 2026-11-28 → 2026-12-05 (+7d) | 2026-12-21 → 2026-12-28 (+7d) |  |  |
| SDR-2-CON-TE-ZA-3460 | Pulling Cable | 2026-11-28 → 2026-12-05 (+7d) | 2026-12-21 → 2026-12-28 (+7d) |  | 7d → 4d |
| 4 | **Manholes** |  | 2027-01-30 → 2027-02-06 (+7d) |  |  |
| 1 | **Excavation** |  | 2026-10-14 → 2026-10-21 (+7d) |  |  |
| SDR-2-CON-TE-ZA-3420 | Excavation for Telecom Manholes |  | 2026-10-14 → 2026-10-21 (+7d) |  | 0.81d → 13.81d |
| 2 | **Bedding Work** | 2026-10-14 → 2026-10-21 (+7d) | 2026-11-07 → 2026-11-14 (+7d) |  |  |
| SDR-2-CON-TE-ZA-3470 | Sand bedding for Telecom Manhole | 2026-10-14 → 2026-10-21 (+7d) | 2026-11-07 → 2026-11-14 (+7d) |  | 0.81d → 13.81d |
| 3 | **Install Manholes** | 2026-11-07 → 2026-11-14 (+7d) | 2026-11-30 → 2026-12-07 (+7d) |  |  |
| SDR-2-CON-TE-ZA-3430 | Installation of Telecom Manhole | 2026-11-07 → 2026-11-14 (+7d) | 2026-11-30 → 2026-12-07 (+7d) |  | 0.81d → 13.81d |
| 4 | **Testting** | 2026-11-30 → 2026-12-07 (+7d) | 2026-12-24 → 2026-12-31 (+7d) |  |  |
| SDR-2-CON-TE-ZA-3440 | Telecom Manhole finishing works | 2026-11-30 → 2026-12-07 (+7d) | 2026-12-24 → 2026-12-31 (+7d) |  | 0.81d → 13.81d |
| 5 | **Backfilling** | 2027-01-05 → 2027-01-12 (+7d) | 2027-01-30 → 2027-02-06 (+7d) |  |  |
| SDR-2-CON-TE-ZA-3450 | Backfilling over Telecom Manhole | 2027-01-05 → 2027-01-12 (+7d) | 2027-01-30 → 2027-02-06 (+7d) |  | 0.81d → 13.81d |
| 13 | **TELECOMMUNICATION IN ( PH2-A-MCC0 )** |  | 2026-12-13 → 2026-12-19 (+6d) |  |  |
| 3 | **Ducts** |  | 2026-12-01 → 2026-12-08 (+7d) |  |  |
| 2 | **Excavation** |  | 2026-09-28 → 2026-10-05 (+7d) |  |  |
| SDR-2-CON-TE-ZA-3480 | Excavation for telecom crossing ducts & trenches |  | 2026-09-28 → 2026-10-05 (+7d) |  | 14d → 9d |
| 5 | **Pipe laying** |  | 2026-10-03 → 2026-10-10 (+7d) |  |  |
| SDR-2-CON-TE-ZA-3490 | HDPE Pipes for Telecom Installation |  | 2026-10-03 → 2026-10-10 (+7d) |  | 24d → 21d |
| 6 | **Backfilling** | 2026-10-04 → 2026-10-11 (+7d) | 2026-10-26 → 2026-11-02 (+7d) |  |  |
| SDR-2-CON-TE-ZA-3500 | Backfilling over HDPE Telecom Pipes | 2026-10-04 → 2026-10-11 (+7d) | 2026-10-26 → 2026-11-02 (+7d) |  | 24d → 21d |
| 7 | **Pulling Cable** | 2026-11-08 → 2026-11-15 (+7d) | 2026-12-01 → 2026-12-08 (+7d) |  |  |
| SDR-2-CON-TE-ZA-3550 | Pulling Cable | 2026-11-08 → 2026-11-15 (+7d) | 2026-12-01 → 2026-12-08 (+7d) |  | 24d → 21d |
| 4 | **Manholes** |  | 2026-12-13 → 2026-12-19 (+6d) |  |  |
| 1 | **Excavation** |  | 2026-10-12 → 2026-10-01 (-11d) |  |  |
| SDR-2-CON-TE-ZA-3510 | Excavation for Telecom Manholes |  | 2026-10-12 → 2026-10-01 A (-11d) | 80% → 100% | 14.81d → none |
| 2 | **Bedding Work** |  | 2026-10-12 → 2026-10-18 (+6d) |  |  |
| SDR-2-CON-TE-ZA-3560 | Sand bedding for Telecom Manhole |  | 2026-10-12 → 2026-10-18 (+6d) | 25% → 30% | 14.81d → 12.81d |
| 3 | **Install Manholes** | 2026-10-12 → 2026-10-01 (-11d) | 2026-11-03 → 2026-11-09 (+6d) |  |  |
| SDR-2-CON-TE-ZA-3520 | Installation of Telecom Manhole | 2026-10-12 → 2026-10-01 A (-11d) | 2026-11-03 → 2026-11-09 (+6d) | 0% → 30% | 14.81d → 12.81d |

| ID | Task | Start | Finish | Complete | Total float |
| --- | --- | --- | --- | --- | --- |
| 4 | **Testting** | 2026-11-03 → 2026-11-09 (+6d) | 2026-11-19 → 2026-11-25 (+6d) |  |  |
| SDR-2-CON-TE-ZA-3530 | Telecom Manhole finishing works | 2026-11-03 → 2026-11-09 (+6d) | 2026-11-19 → 2026-11-25 (+6d) |  | 14.81d → 12.81d |
| 5 | **Backfilling** | 2026-11-19 → 2026-11-25 (+6d) | 2026-12-13 → 2026-12-19 (+6d) |  |  |
| SDR-2-CON-TE-ZA-3540 | Backfilling over Telecom Manhole | 2026-11-19 → 2026-11-25 (+6d) | 2026-12-13 → 2026-12-19 (+6d) |  | 14.81d → 12.81d |
| 14 | **TELECOMMUNICATION IN ( PH2-A-MCD0 )** |  | 2026-12-22 → 2026-12-29 (+7d) |  |  |
| 3 | **Ducts** |  | 2026-11-17 → 2026-11-24 (+7d) |  |  |
| 2 | **Excavation** |  | 2026-09-28 → 2026-10-05 (+7d) |  |  |
| SDR-2-CON-TE-ZA-3570 | Excavation for telecom crossing ducts & trenches |  | 2026-09-28 → 2026-10-05 (+7d) |  | 14d → 9d |
| 5 | **Pipe laying** |  | 2026-10-03 → 2026-10-10 (+7d) |  |  |
| SDR-2-CON-TE-ZA-3580 | HDPE Pipes for Telecom Installation |  | 2026-10-03 → 2026-10-10 (+7d) |  | 129d → 123d |
| 6 | **Backfilling** | 2026-10-04 → 2026-10-11 (+7d) | 2026-10-24 → 2026-10-31 (+7d) |  |  |
| SDR-2-CON-TE-ZA-3590 | Backfilling over HDPE Telecom Pipes | 2026-10-04 → 2026-10-11 (+7d) | 2026-10-24 → 2026-10-31 (+7d) |  | 129d → 123d |
| 7 | **Pulling Cable** | 2026-10-25 → 2026-11-01 (+7d) | 2026-11-17 → 2026-11-24 (+7d) |  |  |
| SDR-2-CON-TE-ZA-3640 | Pulling Cable | 2026-10-25 → 2026-11-01 (+7d) | 2026-11-17 → 2026-11-24 (+7d) |  | 129d → 123d |
| 4 | **Manholes** |  | 2026-12-22 → 2026-12-29 (+7d) |  |  |
| 1 | **Excavation** |  | 2026-10-12 → 2026-10-01 (-11d) |  |  |
| SDR-2-CON-TE-ZA-3600 | Excavation for Telecom Manholes |  | 2026-10-12 → 2026-10-01 A (-11d) | 60% → 100% | 41.81d → none |
| 2 | **Bedding Work** |  | 2026-10-15 → 2026-10-22 (+7d) |  |  |
| SDR-2-CON-TE-ZA-3650 | Sand bedding for Telecom Manhole |  | 2026-10-15 → 2026-10-22 (+7d) | 25% → 30% | 38.81d → 43.81d |
| 3 | **Install Manholes** | 2026-10-15 → 2026-10-01 (-14d) | 2026-11-09 → 2026-11-16 (+7d) |  |  |
| SDR-2-CON-TE-ZA-3610 | Installation of Telecom Manhole | 2026-10-15 → 2026-10-01 A (-14d) | 2026-11-09 → 2026-11-16 (+7d) | 0% → 30% | 38.81d → 43.81d |
| 4 | **Testting** | 2026-11-15 → 2026-11-22 (+7d) | 2026-11-28 → 2026-12-05 (+7d) |  |  |
| SDR-2-CON-TE-ZA-3620 | Telecom Manhole finishing works | 2026-11-15 → 2026-11-22 (+7d) | 2026-11-28 → 2026-12-05 (+7d) |  | 34d → 39d |
| 5 | **Backfilling** | 2026-11-29 → 2026-12-06 (+7d) | 2026-12-22 → 2026-12-29 (+7d) |  |  |
| SDR-2-CON-TE-ZA-3630 | Backfilling over Telecom Manhole | 2026-11-29 → 2026-12-06 (+7d) | 2026-12-22 → 2026-12-29 (+7d) |  | 34d → 39d |
| 5 | **TELECOMMUNICATION IN ( PH2-A-MCE0 )** |  | 2027-01-13 → 2027-01-20 (+7d) |  |  |
| 3 | **Ducts** |  | 2026-11-16 → 2026-11-23 (+7d) |  |  |
| 2 | **Excavation** |  | 2026-09-28 → 2026-10-05 (+7d) |  |  |
| SDR-2-CON-TE-ZA-3660 | Excavation for telecom crossing ducts & trenches |  | 2026-09-28 → 2026-10-05 (+7d) |  | 14d → 9d |
| 5 | **Pipe laying** |  | 2026-09-28 → 2026-10-05 (+7d) |  |  |
| SDR-2-CON-TE-ZA-3670 | HDPE Pipes for Telecom Installation |  | 2026-09-28 → 2026-10-05 (+7d) |  | 130d → 124d |
| 6 | **Backfilling** | 2026-09-29 → 2026-10-06 (+7d) | 2026-10-22 → 2026-10-29 (+7d) |  |  |
| SDR-2-CON-TE-ZA-3680 | Backfilling over HDPE Telecom Pipes | 2026-09-29 → 2026-10-06 (+7d) | 2026-10-22 → 2026-10-29 (+7d) |  | 130d → 124d |
| 7 | **Pulling Cable** | 2026-10-24 → 2026-10-31 (+7d) | 2026-11-16 → 2026-11-23 (+7d) |  |  |
| SDR-2-CON-TE-ZA-3730 | Pulling Cable | 2026-10-24 → 2026-10-31 (+7d) | 2026-11-16 → 2026-11-23 (+7d) |  | 130d → 124d |
| 4 | **Manholes** | 2026-09-28 → 2026-10-05 (+7d) | 2027-01-13 → 2027-01-20 (+7d) |  |  |
| 1 | **Excavation** | 2026-09-28 → 2026-10-05 (+7d) | 2026-10-21 → 2026-10-28 (+7d) |  |  |
| SDR-2-CON-TE-ZA-3690 | Excavation for Telecom Manholes | 2026-09-28 → 2026-10-05 (+7d) | 2026-10-21 → 2026-10-28 (+7d) |  | 15d → 10d |
| 2 | **Bedding Work** | 2026-10-22 → 2026-10-29 (+7d) | 2026-11-14 → 2026-11-21 (+7d) |  |  |
| SDR-2-CON-TE-ZA-3740 | Sand bedding for Telecom Manhole | 2026-10-22 → 2026-10-29 (+7d) | 2026-11-14 → 2026-11-21 (+7d) |  | 15d → 10d |
| 3 | **Install Manholes** | 2026-11-15 → 2026-11-22 (+7d) | 2026-12-07 → 2026-12-14 (+7d) |  |  |
| SDR-2-CON-TE-ZA-3700 | Installation of Telecom Manhole | 2026-11-15 → 2026-11-22 (+7d) | 2026-12-07 → 2026-12-14 (+7d) |  | 15d → 10d |
| 4 | **Testting** | 2026-12-08 → 2026-12-15 (+7d) | 2026-12-21 → 2026-12-28 (+7d) |  |  |
| SDR-2-CON-TE-ZA-3710 | Telecom Manhole finishing works | 2026-12-08 → 2026-12-15 (+7d) | 2026-12-21 → 2026-12-28 (+7d) |  | 15d → 10d |
| 5 | **Backfilling** | 2026-12-22 → 2026-12-29 (+7d) | 2027-01-13 → 2027-01-20 (+7d) |  |  |
| SDR-2-CON-TE-ZA-3720 | Backfilling over Telecom Manhole | 2026-12-22 → 2026-12-29 (+7d) | 2027-01-13 → 2027-01-20 (+7d) |  | 15d → 10d |
| 6 | **TELECOMMUNICATION IN ( PH2-A-MCF0 )** |  | 2027-01-14 → 2027-01-21 (+7d) |  |  |
| 3 | **Ducts** |  | 2026-11-15 → 2026-11-22 (+7d) |  |  |
| 2 | **Excavation** |  | 2026-09-28 → 2026-10-05 (+7d) |  |  |
| SDR-2-CON-TE-ZA-3750 | Excavation for telecom crossing ducts & trenches |  | 2026-09-28 → 2026-10-05 (+7d) |  | 14d → 9d |
| 5 | **Pipe laying** |  | 2026-09-28 → 2026-10-05 (+7d) |  |  |
| SDR-2-CON-TE-ZA-3760 | HDPE Pipes for Telecom Installation |  | 2026-09-28 → 2026-10-05 (+7d) |  | 66d → 61d |
| 6 | **Backfilling** | 2026-09-29 → 2026-10-06 (+7d) | 2026-10-22 → 2026-10-29 (+7d) |  |  |
| SDR-2-CON-TE-ZA-3770 | Backfilling over HDPE Telecom Pipes | 2026-09-29 → 2026-10-06 (+7d) | 2026-10-22 → 2026-10-29 (+7d) |  | 66d → 61d |
| 7 | **Pulling Cable** | 2026-10-24 → 2026-10-31 (+7d) | 2026-11-15 → 2026-11-22 (+7d) |  |  |
| SDR-2-CON-TE-ZA-3820 | Pulling Cable | 2026-10-24 → 2026-10-31 (+7d) | 2026-11-15 → 2026-11-22 (+7d) |  | 66d → 61d |
| 4 | **Manholes** | 2026-09-28 → 2026-10-05 (+7d) | 2027-01-14 → 2027-01-21 (+7d) |  |  |
| 1 | **Excavation** | 2026-09-28 → 2026-10-05 (+7d) | 2026-10-21 → 2026-10-28 (+7d) |  |  |
| SDR-2-CON-TE-ZA-3780 | Excavation for Telecom Manholes | 2026-09-28 → 2026-10-05 (+7d) | 2026-10-21 → 2026-10-28 (+7d) |  | 14d → 9d |
| 2 | **Bedding Work** | 2026-10-22 → 2026-10-29 (+7d) | 2026-11-14 → 2026-11-21 (+7d) |  |  |
| SDR-2-CON-TE-ZA-3830 | Sand bedding for Telecom Manhole | 2026-10-22 → 2026-10-29 (+7d) | 2026-11-14 → 2026-11-21 (+7d) |  | 14d → 9d |
| 3 | **Install Manholes** | 2026-11-15 → 2026-11-22 (+7d) | 2026-12-07 → 2026-12-14 (+7d) |  |  |
| SDR-2-CON-TE-ZA-3790 | Installation of Telecom Manhole | 2026-11-15 → 2026-11-22 (+7d) | 2026-12-07 → 2026-12-14 (+7d) |  | 14d → 9d |
| 4 | **Testting** | 2026-12-08 → 2026-12-15 (+7d) | 2026-12-21 → 2026-12-28 (+7d) |  |  |
| SDR-2-CON-TE-ZA-3800 | Telecom Manhole finishing works | 2026-12-08 → 2026-12-15 (+7d) | 2026-12-21 → 2026-12-28 (+7d) |  | 14d → 9d |
| 5 | **Backfilling** | 2026-12-22 → 2026-12-29 (+7d) | 2027-01-14 → 2027-01-21 (+7d) |  |  |
| SDR-2-CON-TE-ZA-3810 | Backfilling over Telecom Manhole | 2026-12-22 → 2026-12-29 (+7d) | 2027-01-14 → 2027-01-21 (+7d) |  | 14d → 9d |
| 7 | **TELECOMMUNICATION IN ( PH2-A-MCG0 )** |  | 2027-01-13 → 2027-01-20 (+7d) |  |  |
| 3 | **Ducts** |  | 2026-11-25 → 2026-12-02 (+7d) |  |  |
| 2 | **Excavation** |  | 2026-09-28 → 2026-10-05 (+7d) |  |  |

| ID | Task | Start | Finish | Total float |
| --- | --- | --- | --- | --- |
| SDR-2-CON-TE-ZA-3840 | Excavation for telecom crossing ducts & trenches |  | 2026-09-28 → 2026-10-05 (+7d) | 15d → 10d |
| 5 | **Pipe laying** |  | 2026-09-28 → 2026-10-05 (+7d) |  |
| SDR-2-CON-TE-ZA-3850 | HDPE Pipes for Telecom Installation |  | 2026-09-28 → 2026-10-05 (+7d) | 57d → 52d |
| 6 | **Backfilling** | 2026-09-29 → 2026-10-06 (+7d) | 2026-10-21 → 2026-10-28 (+7d) |  |
| SDR-2-CON-TE-ZA-3860 | Backfilling over HDPE Telecom Pipes | 2026-09-29 → 2026-10-06 (+7d) | 2026-10-21 → 2026-10-28 (+7d) | 57d → 52d |
| 7 | **Pulling Cable** | 2026-11-02 → 2026-11-09 (+7d) | 2026-11-25 → 2026-12-02 (+7d) |  |
| SDR-2-CON-TE-ZA-3910 | Pulling Cable | 2026-11-02 → 2026-11-09 (+7d) | 2026-11-25 → 2026-12-02 (+7d) | 57d → 52d |
| 4 | **Manholes** | 2026-09-28 → 2026-10-05 (+7d) | 2027-01-13 → 2027-01-20 (+7d) |  |
| 1 | **Excavation** | 2026-09-28 → 2026-10-05 (+7d) | 2026-10-21 → 2026-10-28 (+7d) |  |
| SDR-2-CON-TE-ZA-3870 | Excavation for Telecom Manholes | 2026-09-28 → 2026-10-05 (+7d) | 2026-10-21 → 2026-10-28 (+7d) | 15d → 10d |
| 2 | **Bedding Work** | 2026-10-22 → 2026-10-29 (+7d) | 2026-11-14 → 2026-11-21 (+7d) |  |
| SDR-2-CON-TE-ZA-3920 | Sand bedding for Telecom Manhole | 2026-10-22 → 2026-10-29 (+7d) | 2026-11-14 → 2026-11-21 (+7d) | 15d → 10d |
| 3 | **Install Manholes** | 2026-11-15 → 2026-11-22 (+7d) | 2026-12-07 → 2026-12-14 (+7d) |  |
| SDR-2-CON-TE-ZA-3880 | Installation of Telecom Manhole | 2026-11-15 → 2026-11-22 (+7d) | 2026-12-07 → 2026-12-14 (+7d) | 15d → 10d |
| 4 | **Testting** | 2026-12-08 → 2026-12-15 (+7d) | 2026-12-21 → 2026-12-28 (+7d) |  |
| SDR-2-CON-TE-ZA-3890 | Telecom Manhole finishing works | 2026-12-08 → 2026-12-15 (+7d) | 2026-12-21 → 2026-12-28 (+7d) | 15d → 10d |
| 5 | **Backfilling** | 2026-12-22 → 2026-12-29 (+7d) | 2027-01-13 → 2027-01-20 (+7d) |  |
| SDR-2-CON-TE-ZA-3900 | Backfilling over Telecom Manhole | 2026-12-22 → 2026-12-29 (+7d) | 2027-01-13 → 2027-01-20 (+7d) | 15d → 10d |
| 8 | **TELECOMMUNICATION IN ( PH2-A-MCH0 )** |  | 2027-01-11 → 2027-01-18 (+7d) |  |
| 3 | **Ducts** |  | 2026-12-08 → 2026-12-15 (+7d) |  |
| 2 | **Excavation** |  | 2026-09-28 → 2026-10-05 (+7d) |  |
| SDR-2-CON-TE-ZA-3930 | Excavation for telecom crossing ducts & trenches |  | 2026-09-28 → 2026-10-05 (+7d) | 17d → 12d |
| 5 | **Pipe laying** | 2026-09-29 → 2026-10-06 (+7d) | 2026-10-21 → 2026-10-28 (+7d) |  |
| SDR-2-CON-TE-ZA-3940 | HDPE Pipes for Telecom Installation | 2026-09-29 → 2026-10-06 (+7d) | 2026-10-21 → 2026-10-28 (+7d) | 46d → 41d |
| 6 | **Backfilling** | 2026-10-22 → 2026-10-29 (+7d) | 2026-11-14 → 2026-11-21 (+7d) |  |
| SDR-2-CON-TE-ZA-3950 | Backfilling over HDPE Telecom Pipes | 2026-10-22 → 2026-10-29 (+7d) | 2026-11-14 → 2026-11-21 (+7d) | 46d → 41d |
| 7 | **Pulling Cable** | 2026-11-15 → 2026-11-22 (+7d) | 2026-12-08 → 2026-12-15 (+7d) |  |
| SDR-2-CON-TE-ZA-4000 | Pulling Cable | 2026-11-15 → 2026-11-22 (+7d) | 2026-12-08 → 2026-12-15 (+7d) | 46d → 41d |
| 4 | **Manholes** | 2026-09-28 → 2026-10-05 (+7d) | 2027-01-11 → 2027-01-18 (+7d) |  |
| 1 | **Excavation** | 2026-09-28 → 2026-10-05 (+7d) | 2026-10-21 → 2026-10-28 (+7d) |  |
| SDR-2-CON-TE-ZA-3960 | Excavation for Telecom Manholes | 2026-09-28 → 2026-10-05 (+7d) | 2026-10-21 → 2026-10-28 (+7d) | 17d → 12d |
| 2 | **Bedding Work** | 2026-10-22 → 2026-10-29 (+7d) | 2026-11-14 → 2026-11-21 (+7d) |  |
| SDR-2-CON-TE-ZA-4010 | Sand bedding for Telecom Manhole | 2026-10-22 → 2026-10-29 (+7d) | 2026-11-14 → 2026-11-21 (+7d) | 17d → 12d |
| 3 | **Install Manholes** | 2026-11-15 → 2026-11-22 (+7d) | 2026-12-07 → 2026-12-14 (+7d) |  |
| SDR-2-CON-TE-ZA-3970 | Installation of Telecom Manhole | 2026-11-15 → 2026-11-22 (+7d) | 2026-12-07 → 2026-12-14 (+7d) | 17d → 12d |
| 4 | **Testting** | 2026-12-08 → 2026-12-15 (+7d) | 2026-12-21 → 2026-12-28 (+7d) |  |
| SDR-2-CON-TE-ZA-3980 | Telecom Manhole finishing works | 2026-12-08 → 2026-12-15 (+7d) | 2026-12-21 → 2026-12-28 (+7d) | 17d → 12d |
| 5 | **Backfilling** | 2026-12-22 → 2026-12-29 (+7d) | 2027-01-11 → 2027-01-18 (+7d) |  |
| SDR-2-CON-TE-ZA-3990 | Backfilling over Telecom Manhole | 2026-12-22 → 2026-12-29 (+7d) | 2027-01-11 → 2027-01-18 (+7d) | 17d → 12d |
| 9 | **TELECOMMUNICATION IN ( PH2-ART-MC00 )** |  | 2027-01-11 → 2027-01-18 (+7d) |  |
| 3 | **Ducts** |  | 2026-12-07 → 2026-12-14 (+7d) |  |
| 2 | **Excavation** |  | 2026-09-28 → 2026-10-05 (+7d) |  |
| SDR-2-CON-TE-ZA-4020 | Excavation for telecom crossing ducts & trenches |  | 2026-09-28 → 2026-10-05 (+7d) | 17d → 12d |
| 5 | **Pipe laying** | 2026-09-29 → 2026-10-06 (+7d) | 2026-10-21 → 2026-10-28 (+7d) |  |
| SDR-2-CON-TE-ZA-4030 | HDPE Pipes for Telecom Installation | 2026-09-29 → 2026-10-06 (+7d) | 2026-10-21 → 2026-10-28 (+7d) | 47d → 42d |
| 6 | **Backfilling** | 2026-10-22 → 2026-10-29 (+7d) | 2026-11-12 → 2026-11-19 (+7d) |  |
| SDR-2-CON-TE-ZA-4040 | Backfilling over HDPE Telecom Pipes | 2026-10-22 → 2026-10-29 (+7d) | 2026-11-12 → 2026-11-19 (+7d) | 47d → 42d |
| 7 | **Pulling Cable** | 2026-11-14 → 2026-11-21 (+7d) | 2026-12-07 → 2026-12-14 (+7d) |  |
| SDR-2-CON-TE-ZA-4090 | Pulling Cable | 2026-11-14 → 2026-11-21 (+7d) | 2026-12-07 → 2026-12-14 (+7d) | 47d → 42d |
| 4 | **Manholes** | 2026-09-28 → 2026-10-05 (+7d) | 2027-01-11 → 2027-01-18 (+7d) |  |
| 1 | **Excavation** | 2026-09-28 → 2026-10-05 (+7d) | 2026-10-21 → 2026-10-28 (+7d) |  |
| SDR-2-CON-TE-ZA-4050 | Excavation for Telecom Manholes | 2026-09-28 → 2026-10-05 (+7d) | 2026-10-21 → 2026-10-28 (+7d) | 17d → 12d |
| 2 | **Bedding Work** | 2026-10-22 → 2026-10-29 (+7d) | 2026-11-14 → 2026-11-21 (+7d) |  |
| SDR-2-CON-TE-ZA-4100 | Sand bedding for Telecom Manhole | 2026-10-22 → 2026-10-29 (+7d) | 2026-11-14 → 2026-11-21 (+7d) | 17d → 12d |
| 3 | **Install Manholes** | 2026-11-15 → 2026-11-22 (+7d) | 2026-12-07 → 2026-12-14 (+7d) |  |
| SDR-2-CON-TE-ZA-4060 | Installation of Telecom Manhole | 2026-11-15 → 2026-11-22 (+7d) | 2026-12-07 → 2026-12-14 (+7d) | 17d → 12d |
| 4 | **Testting** | 2026-12-08 → 2026-12-15 (+7d) | 2026-12-21 → 2026-12-28 (+7d) |  |
| SDR-2-CON-TE-ZA-4070 | Telecom Manhole finishing works | 2026-12-08 → 2026-12-15 (+7d) | 2026-12-21 → 2026-12-28 (+7d) | 17d → 12d |
| 5 | **Backfilling** | 2026-12-22 → 2026-12-29 (+7d) | 2027-01-11 → 2027-01-18 (+7d) |  |
| SDR-2-CON-TE-ZA-4080 | Backfilling over Telecom Manhole | 2026-12-22 → 2026-12-29 (+7d) | 2027-01-11 → 2027-01-18 (+7d) | 17d → 12d |
| 10 | **TELECOMMUNICATION IN ( PH2-ART-MC10 )** |  | 2026-11-21 → 2026-11-28 (+7d) |  |
| 3 | **Ducts** |  | 2026-11-15 → 2026-11-22 (+7d) |  |
| 2 | **Excavation** |  | 2026-09-28 → 2026-10-05 (+7d) |  |
| SDR-2-CON-TE-ZA-4110 | Excavation for telecom crossing ducts & trenches |  | 2026-09-28 → 2026-10-05 (+7d) | 66d → 61d |
| 5 | **Pipe laying** |  | 2026-09-28 → 2026-10-05 (+7d) |  |
| SDR-2-CON-TE-ZA-4120 | HDPE Pipes for Telecom Installation |  | 2026-09-28 → 2026-10-05 (+7d) | 66d → 61d |
| 6 | **Backfilling** | 2026-09-29 → 2026-10-06 (+7d) | 2026-10-21 → 2026-10-28 (+7d) |  |
| SDR-2-CON-TE-ZA-4130 | Backfilling over HDPE Telecom Pipes | 2026-09-29 → 2026-10-06 (+7d) | 2026-10-21 → 2026-10-28 (+7d) | 66d → 61d |
| 7 | **Pulling Cable** | 2026-10-22 → 2026-10-29 (+7d) | 2026-11-15 → 2026-11-22 (+7d) |  |
| SDR-2-CON-TE-ZA-4180 | Pulling Cable | 2026-10-22 → 2026-10-29 (+7d) | 2026-11-15 → 2026-11-22 (+7d) | 66d → 61d |

| ID | Task | Start | Finish | Complete | Total float |
| --- | --- | --- | --- | --- | --- |
| 4 | **Manholes** |  | 2026-11-21 → 2026-11-28 (+7d) |  |  |
| 1 | **Excavation** |  | 2026-10-13 → 2026-09-30 (-13d) |  |  |
| SDR-2-CON-TE-ZA-4140 | Excavation for Telecom Manholes |  | 2026-10-13 → 2026-09-30 A (-13d) | 85% → 100% | 62.46d → none |
| 2 | **Bedding Work** |  | 2026-10-14 → 2026-10-21 (+7d) |  |  |
| SDR-2-CON-TE-ZA-4190 | Sand bedding for Telecom Manhole |  | 2026-10-14 → 2026-10-21 (+7d) |  | 61.46d → 56.46d |
| 3 | **Install Manholes** |  | 2026-10-14 → 2026-10-21 (+7d) |  |  |
| SDR-2-CON-TE-ZA-4150 | Installation of Telecom Manhole |  | 2026-10-14 → 2026-10-21 (+7d) |  | 61.46d → 56.46d |
| 4 | **Testting** | 2026-10-14 → 2026-10-21 (+7d) | 2026-10-27 → 2026-11-03 (+7d) |  |  |
| SDR-2-CON-TE-ZA-4160 | Telecom Manhole finishing works | 2026-10-14 → 2026-10-21 (+7d) | 2026-10-27 → 2026-11-03 (+7d) |  | 61.46d → 56.46d |
| 5 | **Backfilling** | 2026-10-27 → 2026-11-03 (+7d) | 2026-11-21 → 2026-11-28 (+7d) |  |  |
| SDR-2-CON-TE-ZA-4170 | Backfilling over Telecom Manhole | 2026-10-27 → 2026-11-03 (+7d) | 2026-11-21 → 2026-11-28 (+7d) |  | 61.46d → 56.46d |
| ZG | **ZONE G** |  | 2027-02-16 → 2027-02-24 (+8d) |  |  |
| 1 | **Street Lighting Network** |  | 2027-02-16 → 2027-02-24 (+8d) |  |  |
| 5 | **Street Lighting IN ( PH2-G-MCA0 )** |  | 2026-11-23 → 2026-11-30 (+7d) |  |  |
| 10 | **Excavation** |  | 2026-09-28 → 2026-10-05 (+7d) |  |  |
| SDR-2-CON-SL-ZA-3230 | Excavation for LV Cable drawpits & trenches |  | 2026-09-28 → 2026-10-05 (+7d) | 75% → 76% | 38d → 39d |
| 11 | **Install Footings** |  | 2026-09-28 → 2026-10-05 (+7d) |  |  |
| SDR-2-CON-SL-ZA-3240 | Install Footings |  | 2026-09-28 → 2026-10-05 (+7d) |  | 55d → 64d |
| 12 | **Backfilling** | 2026-09-29 → 2026-10-06 (+7d) | 2026-10-21 → 2026-10-28 (+7d) |  |  |
| SDR-2-CON-SL-ZA-3260 | Backfilling over LV Cables of Street lighting | 2026-09-29 → 2026-10-06 (+7d) | 2026-10-21 → 2026-10-28 (+7d) |  | 55d → 64d |
| 13 | **Install pole** | 2026-10-31 → 2026-11-07 (+7d) | 2026-11-23 → 2026-11-30 (+7d) |  |  |
| SDR-2-CON-SL-ZA-3250 | Install Pole | 2026-10-31 → 2026-11-07 (+7d) | 2026-11-23 → 2026-11-30 (+7d) |  | 55d → 64d |
| 6 | **Street Lighting IN ( PH2-G-MCE0 )** |  | 2026-12-08 → 2026-12-15 (+7d) |  |  |
| 10 | **Excavation** |  | 2026-09-28 → 2026-10-05 (+7d) |  |  |
| SDR-2-CON-SL-ZA-3270 | Excavation for LV Cable drawpits & trenches |  | 2026-09-28 → 2026-10-05 (+7d) | 75% → 76% | 35d → 39d |
| 11 | **Install Footings** |  | 2026-09-28 → 2026-10-05 (+7d) |  |  |
| SDR-2-CON-SL-ZA-3280 | Install Footings |  | 2026-09-28 → 2026-10-05 (+7d) |  | 35d → 40d |
| 12 | **Backfilling** | 2026-09-29 → 2026-10-06 (+7d) | 2026-10-21 → 2026-10-28 (+7d) |  |  |
| SDR-2-CON-SL-ZA-3300 | Backfilling over LV Cables of Street lighting | 2026-09-29 → 2026-10-06 (+7d) | 2026-10-21 → 2026-10-28 (+7d) |  | 35d → 40d |
| 13 | **Install pole** | 2026-11-15 → 2026-11-22 (+7d) | 2026-12-08 → 2026-12-15 (+7d) |  |  |
| SDR-2-CON-SL-ZA-3290 | Install Pole | 2026-11-15 → 2026-11-22 (+7d) | 2026-12-08 → 2026-12-15 (+7d) |  | 25d → 30d |
| 7 | **Street Lighting IN ( PH2-G-MCF0 )** |  | 2026-11-26 → 2026-12-03 (+7d) |  |  |
| 10 | **Excavation** |  | 2026-09-28 → 2026-10-05 (+7d) |  |  |
| SDR-2-CON-SL-ZA-3310 | Excavation for LV Cable drawpits & trenches |  | 2026-09-28 → 2026-10-05 (+7d) | 75% → 76% | 38d → 39d |
| 11 | **Install Footings** |  | 2026-09-28 → 2026-10-05 (+7d) |  |  |
| SDR-2-CON-SL-ZA-3320 | Install Footings |  | 2026-09-28 → 2026-10-05 (+7d) |  | 50d → 51d |
| 12 | **Backfilling** | 2026-09-29 → 2026-10-06 (+7d) | 2026-10-21 → 2026-10-28 (+7d) |  |  |
| SDR-2-CON-SL-ZA-3340 | Backfilling over LV Cables of Street lighting | 2026-09-29 → 2026-10-06 (+7d) | 2026-10-21 → 2026-10-28 (+7d) |  | 50d → 51d |
| 13 | **Install pole** | 2026-11-03 → 2026-11-10 (+7d) | 2026-11-26 → 2026-12-03 (+7d) |  |  |
| SDR-2-CON-SL-ZA-3330 | Install Pole | 2026-11-03 → 2026-11-10 (+7d) | 2026-11-26 → 2026-12-03 (+7d) |  | 50d → 51d |
| 4 | **Street Lighting IN ( PH2-G-MCG0 )** |  | 2026-11-26 → 2026-12-03 (+7d) |  |  |
| 10 | **Excavation** |  | 2026-09-28 → 2026-10-05 (+7d) |  |  |
| SDR-2-CON-SL-ZA-3350 | Excavation for LV Cable drawpits & trenches |  | 2026-09-28 → 2026-10-05 (+7d) |  | 38d → 39d |
| 11 | **Install Footings** |  | 2026-09-28 → 2026-10-05 (+7d) |  |  |
| SDR-2-CON-SL-ZA-3360 | Install Footings |  | 2026-09-28 → 2026-10-05 (+7d) |  | 50d → 51d |
| 12 | **Backfilling** | 2026-09-29 → 2026-10-06 (+7d) | 2026-10-21 → 2026-10-28 (+7d) |  |  |
| SDR-2-CON-SL-ZA-3380 | Backfilling over LV Cables of Street lighting | 2026-09-29 → 2026-10-06 (+7d) | 2026-10-21 → 2026-10-28 (+7d) |  | 50d → 51d |
| 13 | **Install pole** | 2026-11-03 → 2026-11-10 (+7d) | 2026-11-26 → 2026-12-03 (+7d) |  |  |
| SDR-2-CON-SL-ZA-3370 | Install Pole | 2026-11-03 → 2026-11-10 (+7d) | 2026-11-26 → 2026-12-03 (+7d) |  | 50d → 51d |
| 1 | **Street Lighting IN ( PH2-G-MCZ0 )** |  | 2026-09-28 → 2026-10-05 (+7d) |  |  |
| 10 | **Excavation** |  | 2026-09-28 → 2026-10-05 (+7d) |  |  |
| SDR-2-CON-SL-ZA-3390 | Excavation for LV Cable drawpits & trenches |  | 2026-09-28 → 2026-10-05 (+7d) |  | 38d → 39d |
| 11 | **Install Footings** |  | 2026-09-28 → 2026-10-05 (+7d) |  |  |
| SDR-2-CON-SL-ZA-3400 | Install Footings |  | 2026-09-28 → 2026-10-05 (+7d) |  | 101d → 102d |
| 12 | **Backfilling** |  | 2026-09-28 → 2026-10-05 (+7d) |  |  |
| SDR-2-CON-SL-ZA-3420 | Backfilling over LV Cables of Street lighting |  | 2026-09-28 → 2026-10-05 (+7d) |  | 101d → 102d |
| 13 | **Install pole** |  | 2026-09-28 → 2026-10-05 (+7d) |  |  |
| SDR-2-CON-SL-ZA-3410 | Install Pole |  | 2026-09-28 → 2026-10-05 (+7d) |  | 101d → 102d |
| 10 | **Lighting Pole Panels** | 2026-09-28 → 2026-10-05 (+7d) | 2026-12-30 → 2027-01-06 (+7d) |  |  |
| 1 | **Excavation** | 2026-09-28 → 2026-10-05 (+7d) | 2026-10-21 → 2026-10-28 (+7d) |  |  |
| SDR-2-CON-SL-ZA-3430 | Street Lighting Panels Excavation | 2026-09-28 → 2026-10-05 (+7d) | 2026-10-21 → 2026-10-28 (+7d) |  | 38d → 39d |
| 2 | **Install Footings** | 2026-10-22 → 2026-10-29 (+7d) | 2026-11-12 → 2026-11-19 (+7d) |  |  |
| SDR-2-CON-SL-ZA-3440 | Installation Footings Street Lighting Panels | 2026-10-22 → 2026-10-29 (+7d) | 2026-11-12 → 2026-11-19 (+7d) |  | 92d → 86d |
| 3 | **Backfilling** | 2026-11-14 → 2026-11-21 (+7d) | 2026-12-06 → 2026-12-13 (+7d) |  |  |
| SDR-2-CON-SL-ZA-3450 | Street Lighting Panels Backfilling | 2026-11-14 → 2026-11-21 (+7d) | 2026-12-06 → 2026-12-13 (+7d) |  | 92d → 86d |
| 4 | **Install pole** | 2026-12-07 → 2026-12-14 (+7d) | 2026-12-30 → 2027-01-06 (+7d) |  |  |
| SDR-2-CON-SL-ZA-3460 | Street Lighting Panels Installation | 2026-12-07 → 2026-12-14 (+7d) | 2026-12-30 → 2027-01-06 (+7d) |  | 92d → 86d |
| 11 | **Ring Main Unit** | 2026-10-22 → 2026-10-29 (+7d) | 2026-12-26 → 2027-01-02 (+7d) |  |  |
| 1 | **Leveling** | 2026-10-22 → 2026-10-29 (+7d) | 2026-11-14 → 2026-11-21 (+7d) |  |  |
| SDR-2-CON-SL-ZA-3470 | Ring Main Unit leveling | 2026-10-22 → 2026-10-29 (+7d) | 2026-11-14 → 2026-11-21 (+7d) |  | 38d → 39d |

| ID | Task | Start | Finish | Complete | Total float |
| --- | --- | --- | --- | --- | --- |
| 2 | **Lean Concrete** | 2026-11-15 → 2026-11-22 (+7d) | 2026-12-02 → 2026-12-09 (+7d) |  |  |
| SDR-2-CON-SL-ZA-3480 | Ring Main Unit Lean Concrete | 2026-11-15 → 2026-11-22 (+7d) | 2026-12-02 → 2026-12-09 (+7d) |  | 38d → 39d |
| 3 | **Installation** | 2026-12-03 → 2026-12-10 (+7d) | 2026-12-26 → 2027-01-02 (+7d) |  |  |
| SDR-2-CON-SL-ZA-3490 | Ring Main Unit installation for Street Lighting | 2026-12-03 → 2026-12-10 (+7d) | 2026-12-26 → 2027-01-02 (+7d) |  | 38d → 39d |
| 12 | **Feeder Pillars** | 2026-10-25 → 2026-11-01 (+7d) | 2027-01-02 → 2027-01-09 (+7d) |  |  |
| 1 | **Leveling** | 2026-10-25 → 2026-11-01 (+7d) | 2026-11-16 → 2026-11-23 (+7d) |  |  |
| SDR-2-CON-SL-ZA-3500 | Feeder Pillars Leveling | 2026-10-25 → 2026-11-01 (+7d) | 2026-11-16 → 2026-11-23 (+7d) |  | 46d → 41d |
| 2 | **Lean Concrete** | 2026-11-17 → 2026-11-24 (+7d) | 2026-12-09 → 2026-12-16 (+7d) |  |  |
| SDR-2-CON-SL-ZA-3510 | Feeder Pillars Lean Concrete | 2026-11-17 → 2026-11-24 (+7d) | 2026-12-09 → 2026-12-16 (+7d) |  | 46d → 41d |
| 3 | **Installation** | 2026-12-10 → 2026-12-17 (+7d) | 2027-01-02 → 2027-01-09 (+7d) |  |  |
| SDR-2-CON-SL-ZA-3520 | Feeder Pillars Installation | 2026-12-10 → 2026-12-17 (+7d) | 2027-01-02 → 2027-01-09 (+7d) |  | 46d → 41d |
| 13 | **KWH Frame** | 2026-11-28 → 2026-12-05 (+7d) | 2027-02-04 → 2027-02-11 (+7d) |  |  |
| 1 | **Leveling** | 2026-11-28 → 2026-12-05 (+7d) | 2026-12-20 → 2026-12-27 (+7d) |  |  |
| SDR-2-CON-SL-ZA-3530 | KWH meter mounting frame Leveling | 2026-11-28 → 2026-12-05 (+7d) | 2026-12-20 → 2026-12-27 (+7d) |  | 24d → 18d |
| 2 | **Lean Concrete** | 2026-12-21 → 2026-12-28 (+7d) | 2027-01-12 → 2027-01-19 (+7d) |  |  |
| SDR-2-CON-SL-ZA-3540 | KWH meter mounting frame Lean Concrete | 2026-12-21 → 2026-12-28 (+7d) | 2027-01-12 → 2027-01-19 (+7d) |  | 24d → 18d |
| 3 | **Installation** | 2027-01-13 → 2027-01-20 (+7d) | 2027-02-04 → 2027-02-11 (+7d) |  |  |
| SDR-2-CON-SL-ZA-3550 | KWH meter mounting frame installation | 2027-01-13 → 2027-01-20 (+7d) | 2027-02-04 → 2027-02-11 (+7d) |  | 24d → 18d |
| 14 | **Street Lighting Sub-station** | 2026-11-29 → 2026-12-06 (+7d) | 2027-02-16 → 2027-02-24 (+8d) |  |  |
| 1 | **Leveling** | 2026-11-29 → 2026-12-06 (+7d) | 2026-12-21 → 2026-12-28 (+7d) |  |  |
| SDR-2-CON-SL-ZA-3560 | Unit Substation Leveling | 2026-11-29 → 2026-12-06 (+7d) | 2026-12-21 → 2026-12-28 (+7d) |  | 14d → 8d |
| 2 | **Lean Concrete** | 2026-12-22 → 2026-12-29 (+7d) | 2027-01-12 → 2027-01-19 (+7d) |  |  |
| SDR-2-CON-SL-ZA-3570 | Unit Substation Lean Concrete | 2026-12-22 → 2026-12-29 (+7d) | 2027-01-12 → 2027-01-19 (+7d) |  | 14d → 8d |
| 3 | **Installation** | 2027-01-25 → 2027-02-01 (+7d) | 2027-02-16 → 2027-02-24 (+8d) |  |  |
| SDR-2-CON-SL-ZA-3580 | Unit Substation Install for Street Lighting | 2027-01-25 → 2027-02-01 (+7d) | 2027-02-16 → 2027-02-24 (+8d) |  | 14d → 8d |
| 2 | **MV Network** |  | 2026-11-02 → 2026-11-09 (+7d) |  |  |
| 1 | **LOOP 1** |  | 2026-11-02 → 2026-11-09 (+7d) |  |  |
| 6 | **Excavation** |  | 2026-09-28 → 2026-10-05 (+7d) |  |  |
| SDR-2-CON-MV-ZA-1280 | Excavation Works |  | 2026-09-28 → 2026-10-05 (+7d) |  | 55d → 68d |
| 7 | **Pipe laying** |  | 2026-09-28 → 2026-10-05 (+7d) |  |  |
| SDR-2-CON-MV-ZA-1290 | Pipe Laying |  | 2026-09-28 → 2026-10-05 (+7d) |  | 57d → 72d |
| 8 | **Backfilling** |  | 2026-09-28 → 2026-10-05 (+7d) |  |  |
| SDR-2-CON-MV-ZA-1310 | Backfilling Works |  | 2026-09-28 → 2026-10-05 (+7d) |  | 57d → 72d |
| 9 | **Pulling Cable** | 2026-10-11 → 2026-10-18 (+7d) | 2026-11-02 → 2026-11-09 (+7d) |  |  |
| SDR-2-CON-MV-ZA-1300 | Pulling Cable | 2026-10-11 → 2026-10-18 (+7d) | 2026-11-02 → 2026-11-09 (+7d) |  | 57d → 72d |
| 2 | **LOOP 2** |  | 2026-11-02 → 2026-11-09 (+7d) |  |  |
| 6 | **Excavation** |  | 2026-09-28 → 2026-10-05 (+7d) |  |  |
| SDR-2-CON-MV-ZA-1320 | Excavation Works |  | 2026-09-28 → 2026-10-05 (+7d) |  | 55d → 68d |
| 7 | **Pipe laying** |  | 2026-09-28 → 2026-10-05 (+7d) |  |  |
| SDR-2-CON-MV-ZA-1330 | Pipe Laying |  | 2026-09-28 → 2026-10-05 (+7d) |  | 55d → 68d |
| 8 | **Backfilling** |  | 2026-09-28 → 2026-10-05 (+7d) |  |  |
| SDR-2-CON-MV-ZA-1350 | Backfilling Works |  | 2026-09-28 → 2026-10-05 (+7d) |  | 55d → 68d |
| 9 | **Pulling Cable** | 2026-10-11 → 2026-10-18 (+7d) | 2026-11-02 → 2026-11-09 (+7d) |  |  |
| SDR-2-CON-MV-ZA-1340 | Pulling Cable | 2026-10-11 → 2026-10-18 (+7d) | 2026-11-02 → 2026-11-09 (+7d) |  | 55d → 68d |
| 3 | **TELECOMMUNICATIONS Works** |  | 2026-11-14 → 2026-11-21 (+7d) |  |  |
| 5 | **TELECOMMUNICATION IN ( PH2-G-MCA0 )** |  | 2026-11-14 → 2026-11-21 (+7d) |  |  |
| 3 | **Ducts** |  | 2026-11-14 → 2026-11-21 (+7d) |  |  |
| 2 | **Excavation** |  | 2026-09-28 → 2026-10-05 (+7d) |  |  |
| SDR-2-CON-TE-ZA-4200 | Excavation for telecom crossing ducts & trenches |  | 2026-09-28 → 2026-10-05 (+7d) |  | 45d → 58d |
| 5 | **Pipe laying** |  | 2026-09-28 → 2026-10-05 (+7d) |  |  |
| SDR-2-CON-TE-ZA-4210 | HDPE Pipes for Telecom Installation |  | 2026-09-28 → 2026-10-05 (+7d) |  | 45d → 58d |
| 6 | **Backfilling** | 2026-09-29 → 2026-10-06 (+7d) | 2026-10-21 → 2026-10-28 (+7d) |  |  |
| SDR-2-CON-TE-ZA-4220 | Backfilling over HDPE Telecom Pipes | 2026-09-29 → 2026-10-06 (+7d) | 2026-10-21 → 2026-10-28 (+7d) |  | 45d → 58d |
| 7 | **Pulling Cable** | 2026-10-22 → 2026-10-29 (+7d) | 2026-11-14 → 2026-11-21 (+7d) |  |  |
| SDR-2-CON-TE-ZA-4270 | Pulling Cable | 2026-10-22 → 2026-10-29 (+7d) | 2026-11-14 → 2026-11-21 (+7d) |  | 45d → 58d |
| 4 | **Manholes** |  | 2026-10-21 → 2026-10-28 (+7d) |  |  |
| 1 | **Excavation** |  | 2026-09-28 → 2026-10-05 (+7d) |  |  |
| SDR-2-CON-TE-ZA-4230 | Excavation for Telecom Manholes |  | 2026-09-28 → 2026-10-05 (+7d) | 53% → 60% | 65d → 78d |
| 2 | **Bedding Work** |  | 2026-09-28 → 2026-10-05 (+7d) |  |  |
| SDR-2-CON-TE-ZA-4280 | Sand bedding for Telecom Manhole |  | 2026-09-28 → 2026-10-05 (+7d) | 20% → 25% | 65d → 78d |
| 3 | **Install Manholes** |  | 2026-09-28 → 2026-10-05 (+7d) |  |  |
| SDR-2-CON-TE-ZA-4240 | Installation of Telecom Manhole |  | 2026-09-28 → 2026-10-05 (+7d) | 45% → 50% | 65d → 78d |
| 4 | **Testting** |  | 2026-09-28 → 2026-10-05 (+7d) |  |  |
| SDR-2-CON-TE-ZA-4250 | Telecom Manhole finishing works |  | 2026-09-28 → 2026-10-05 (+7d) |  | 65d → 78d |
| 5 | **Backfilling** | 2026-09-29 → 2026-10-06 (+7d) | 2026-10-21 → 2026-10-28 (+7d) |  |  |
| SDR-2-CON-TE-ZA-4260 | Backfilling over Telecom Manhole | 2026-09-29 → 2026-10-06 (+7d) | 2026-10-21 → 2026-10-28 (+7d) |  | 65d → 78d |
| 6 | **TELECOMMUNICATION IN ( PH2-G-MCE0 )** |  | 2026-10-31 → 2026-11-07 (+7d) |  |  |
| 3 | **Ducts** |  | 2026-09-28 → 2026-10-05 (+7d) |  |  |
| 5 | **Pipe laying** |  | 2026-09-28 → 2026-10-05 (+7d) |  |  |
| SDR-2-CON-TE-ZA-4300 | HDPE Pipes for Telecom Installation |  | 2026-09-28 → 2026-10-05 (+7d) |  | 80d → 77d |

| ID | Task | Start | Finish | Complete | Total float | Predecessors |
| --- | --- | --- | --- | --- | --- | --- |
| 6 | **Backfilling** |  | 2026-09-28 → 2026-10-05 (+7d) |  |  |  |
| SDR-2-CON-TE-ZA-4310 | Backfilling over HDPE Telecom Pipes |  | 2026-09-28 → 2026-10-05 (+7d) |  | 80d → 77d |  |
| 7 | **Pulling Cable** |  | 2026-09-28 → 2026-10-05 (+7d) |  |  |  |
| SDR-2-CON-TE-ZA-4360 | Pulling Cable |  | 2026-09-28 → 2026-10-05 (+7d) |  | 80d → 77d |  |
| 4 | **Manholes** |  | 2026-10-31 → 2026-11-07 (+7d) |  |  |  |
| 1 | **Excavation** |  | 2026-09-28 → 2026-10-05 (+7d) |  |  |  |
| SDR-2-CON-TE-ZA-4320 | Excavation for Telecom Manholes |  | 2026-09-28 → 2026-10-05 (+7d) | 53% → 55% | 57d → 70d |  |
| 2 | **Bedding Work** |  | 2026-09-28 → 2026-10-05 (+7d) |  |  |  |
| SDR-2-CON-TE-ZA-4370 | Sand bedding for Telecom Manhole |  | 2026-09-28 → 2026-10-05 (+7d) |  | 57d → 70d |  |
| 3 | **Install Manholes** |  | 2026-09-28 → 2026-10-05 (+7d) |  |  |  |
| SDR-2-CON-TE-ZA-4330 | Installation of Telecom Manhole |  | 2026-09-28 → 2026-10-05 (+7d) |  | 57d → 70d |  |
| 4 | **Testting** | 2026-09-29 → 2026-10-06 (+7d) | 2026-10-06 → 2026-10-13 (+7d) |  |  |  |
| SDR-2-CON-TE-ZA-4340 | Telecom Manhole finishing works | 2026-09-29 → 2026-10-06 (+7d) | 2026-10-06 → 2026-10-13 (+7d) |  | 57d → 70d |  |
| 5 | **Backfilling** | 2026-10-07 → 2026-10-14 (+7d) | 2026-10-31 → 2026-11-07 (+7d) |  |  |  |
| SDR-2-CON-TE-ZA-4350 | Backfilling over Telecom Manhole | 2026-10-07 → 2026-10-14 (+7d) | 2026-10-31 → 2026-11-07 (+7d) |  | 57d → 70d |  |
| 7 | **TELECOMMUNICATION IN ( PH2-G-MCF0 )** |  | 2026-10-29 → 2026-11-05 (+7d) |  |  |  |
| 3 | **Ducts** |  | 2026-09-28 → 2026-10-05 (+7d) |  |  |  |
| 2 | **Excavation** |  | 2026-09-28 → 2026-10-05 (+7d) |  |  |  |
| SDR-2-CON-TE-ZA-4380 | Excavation for telecom crossing ducts & trenches |  | 2026-09-28 → 2026-10-05 (+7d) |  | 80d → 75d |  |
| 5 | **Pipe laying** |  | 2026-09-28 → 2026-10-05 (+7d) |  |  |  |
| SDR-2-CON-TE-ZA-4390 | HDPE Pipes for Telecom Installation |  | 2026-09-28 → 2026-10-05 (+7d) |  | 107d → 102d |  |
| 6 | **Backfilling** |  | 2026-09-28 → 2026-10-05 (+7d) |  |  |  |
| SDR-2-CON-TE-ZA-4400 | Backfilling over HDPE Telecom Pipes |  | 2026-09-28 → 2026-10-05 (+7d) |  | 107d → 102d |  |
| 7 | **Pulling Cable** |  | 2026-09-28 → 2026-10-05 (+7d) |  |  |  |
| SDR-2-CON-TE-ZA-4450 | Pulling Cable |  | 2026-09-28 → 2026-10-05 (+7d) |  | 107d → 102d |  |
| 4 | **Manholes** |  | 2026-10-29 → 2026-11-05 (+7d) |  |  |  |
| 1 | **Excavation** |  | 2026-09-28 → 2026-10-05 (+7d) |  |  |  |
| SDR-2-CON-TE-ZA-4410 | Excavation for Telecom Manholes |  | 2026-09-28 → 2026-10-05 (+7d) | 55% → 56% | 80d → 75d |  |
| 2 | **Bedding Work** |  | 2026-09-28 → 2026-10-05 (+7d) |  |  |  |
| SDR-2-CON-TE-ZA-4460 | Sand bedding for Telecom Manhole |  | 2026-09-28 → 2026-10-05 (+7d) |  | 80d → 75d |  |
| 3 | **Install Manholes** |  | 2026-09-28 → 2026-10-05 (+7d) |  |  |  |
| SDR-2-CON-TE-ZA-4420 | Installation of Telecom Manhole |  | 2026-09-28 → 2026-10-05 (+7d) |  | 80d → 75d |  |
| 4 | **Testting** | 2026-09-29 → 2026-10-06 (+7d) | 2026-10-06 → 2026-10-13 (+7d) |  |  |  |
| SDR-2-CON-TE-ZA-4430 | Telecom Manhole finishing works | 2026-09-29 → 2026-10-06 (+7d) | 2026-10-06 → 2026-10-13 (+7d) |  | 80d → 75d |  |
| 5 | **Backfilling** | 2026-10-07 → 2026-10-14 (+7d) | 2026-10-29 → 2026-11-05 (+7d) |  |  |  |
| SDR-2-CON-TE-ZA-4440 | Backfilling over Telecom Manhole | 2026-10-07 → 2026-10-14 (+7d) | 2026-10-29 → 2026-11-05 (+7d) |  | 80d → 75d |  |
| 4 | **TELECOMMUNICATION IN ( PH2-G-MCG0 )** |  | 2026-11-11 → 2026-11-18 (+7d) |  |  |  |
| 3 | **Ducts** |  | 2026-09-28 → 2026-10-05 (+7d) |  |  |  |
| 2 | **Excavation** |  | 2026-09-28 → 2026-10-05 (+7d) |  |  |  |
| SDR-2-CON-TE-ZA-4470 | Excavation for telecom crossing ducts & trenches |  | 2026-09-28 → 2026-10-05 (+7d) |  | 80d → 77d |  |
| 5 | **Pipe laying** |  | 2026-09-28 → 2026-10-05 (+7d) |  |  |  |
| SDR-2-CON-TE-ZA-4480 | HDPE Pipes for Telecom Installation |  | 2026-09-28 → 2026-10-05 (+7d) |  | 80d → 77d |  |
| 6 | **Backfilling** |  | 2026-09-28 → 2026-10-05 (+7d) |  |  |  |
| SDR-2-CON-TE-ZA-4490 | Backfilling over HDPE Telecom Pipes |  | 2026-09-28 → 2026-10-05 (+7d) |  | 80d → 77d |  |
| 7 | **Pulling Cable** |  | 2026-09-28 → 2026-10-05 (+7d) |  |  |  |
| SDR-2-CON-TE-ZA-4540 | Pulling Cable |  | 2026-09-28 → 2026-10-05 (+7d) |  | 80d → 77d |  |
| 4 | **Manholes** |  | 2026-11-11 → 2026-11-18 (+7d) |  |  |  |
| 1 | **Excavation** |  | 2026-09-28 → 2026-10-05 (+7d) |  |  |  |
| SDR-2-CON-TE-ZA-4500 | Excavation for Telecom Manholes |  | 2026-09-28 → 2026-10-05 (+7d) |  | 134d → 128d |  |
| 2 | **Bedding Work** |  | 2026-09-28 → 2026-10-05 (+7d) |  |  |  |
| SDR-2-CON-TE-ZA-4550 | Sand bedding for Telecom Manhole |  | 2026-09-28 → 2026-10-05 (+7d) |  | 134d → 128d |  |
| 3 | **Install Manholes** |  | 2026-09-28 → 2026-10-05 (+7d) |  |  |  |
| SDR-2-CON-TE-ZA-4510 | Installation of Telecom Manhole |  | 2026-09-28 → 2026-10-05 (+7d) |  | 134d → 128d |  |
| 4 | **Testting** | 2026-09-29 → 2026-10-06 (+7d) | 2026-10-06 → 2026-10-13 (+7d) |  |  |  |
| SDR-2-CON-TE-ZA-4520 | Telecom Manhole finishing works | 2026-09-29 → 2026-10-06 (+7d) | 2026-10-06 → 2026-10-13 (+7d) |  | 134d → 128d |  |
| 5 | **Backfilling** | 2026-10-19 → 2026-10-26 (+7d) | 2026-11-11 → 2026-11-18 (+7d) |  |  |  |
| SDR-2-CON-TE-ZA-4530 | Backfilling over Telecom Manhole | 2026-10-19 → 2026-10-26 (+7d) | 2026-11-11 → 2026-11-18 (+7d) |  | 134d → 128d |  |
| LI | **Landscape & Irrigation Works** |  | 2027-07-04 → 2027-07-05 (+1d) |  |  |  |
| ZA | **ZONE A** |  | 2027-07-04 → 2027-06-30 (-4d) |  |  |  |
| 2 | **IRRIGATION WORKS** |  | 2027-07-04 → 2027-06-30 (-4d) |  |  |  |
| 1 | **IRRIGATION WORKS IN ( PH2-COL-MC10 )** |  | 2027-06-13 → 2027-06-21 (+8d) |  |  |  |
| 7 | **Pre install** |  | 2027-05-06 → 2027-05-08 (+2d) |  |  |  |
| SDR-2-CON-IR-ZA-1000 | Pre Install for irrigation Works |  | 2027-05-06 → 2027-05-08 (+2d) |  |  | SDR-2-CON-SE-ZA-1490, SDR-2-CON-SE-ZA-1550, SDR-2-CON-SE-ZA-1560, SDR-2-CON-SE-ZA-1620, SDR-2-CON-SE-ZA-1590, SDR-2-CON-SE-ZA-1650, SDR-2-CON-SE-ZA-1660, SDR-2-CON-SE-ZA-1720, SDR-2-CON-SE-ZA-1690, SDR-2-CON-SE-ZA-1750, SDR-2-CON-SE-ZA-1760, SDR-2-CON-SE-ZA-1820, SDR-2-CON-SE-ZA-1790, SDR-2-CON-SE-ZA-1850, SDR-2-CON-SE-ZA-1860, SDR-2-CON-SE-ZA-1920, SDR-2-CON-SE-ZA-1890, SDR-2-CON-SE-ZA-1950, SDR-2-CON-SE-ZA-1960, SDR-2-CON-SE-ZA-2020, SDR-2-CON-SE-ZA-1990, SDR-2-CON-SE-ZA-2050, SDR-2-CON-SE-ZA-2060, SDR-2-CON-SE-ZA-2120, SDR-2-CON-SE-ZA-2070, SDR-2-CON-SE-ZA-2080, SDR-2-CON-SE-ZA-2130, SDR-2-CON-SE-ZA-2090, SDR-2-CON-SE-ZA-2150, SDR-2-CON-SE-ZA-2100, SDR-2-CON-SE-ZA-2140, SDR-2-CON-SE-ZA-2160, SDR-2-CON-SE-ZA-2220, SDR-2-CON-SE-ZA-2170, SDR-2-CON-SE-ZA-2230, SDR-2-CON-SE-ZA-2190, SDR-2-CON-SE-ZA-2250, SDR-2-CON-SE-ZA-2200, SDR-2-CON-SE-ZA-2240, SDR-2-CON-SE-ZA-2260, SDR-2-CON-SE-ZA-2320, SDR-2-CON-SE-ZA-2270, SDR-2-CON-SE-ZA-2280, SDR-2-CON-SE-ZA-2330, SDR-2-CON-SE-ZA-2290, SDR-2-CON-SE-ZA-2350, SDR-2-CON-SE-ZA-2300, SDR-2-CON-SE-ZA-2340, SDR-2-CON-SE-ZA-2360, SDR-2-CON-SE-ZA-2420, SDR-2-CON-SE-ZA-2370, SDR-2-CON-SE-ZA-2380, SDR-2-CON-SE-ZA-2430, SDR-2-CON-SE-ZA-2390, SDR-2-CON-SE-ZA-2450, SDR-2-CON-SE-ZA-2400, SDR-2-CON-SE-ZA-2440, SDR-2-CON-PW-ZG-1000, SDR-2-CON-PW-ZA-2910, SDR-2-CON-PW-ZA-3010, SDR-2-CON-PW-ZA-3020, SDR-2-CON-PW-ZA-3110, SDR-2-CON-PW-ZA-3120, SDR-2-CON-PW-ZA-2560, SDR-2-CON-TE-ZA-4290, SDR-2-CON-RW-ZA-1720, SDR-2-CON-RW-ZA-1720 FF, SDR-2-CON-ST-ZA-6120, SDR-2-CON-SE-ZA-1010 FF, SDR-2-CON-SE-ZA-1020 FF, SDR-2-CON-SE-ZA-1040 FF, SDR-2-CON-SE-ZA-1050 FF, SDR-2-CON-SE-ZA-1470 FF, SDR-2-CON-SE-ZA-1480 FF, SDR-2-CON-SE-ZA-1500 FF, SDR-2-CON-SE-ZA-1510 FF, SDR-2-CON-SE-ZA-1570 FF, SDR-2-CON-SE-ZA-1580 FF, SDR-2-CON-SE-ZA-1600 FF, SDR-2-CON-SE-ZA-1610 FF, SDR-2-CON-SE-ZA-1670 FF, SDR-2-CON-SE-ZA-1680 FF, SDR-2-CON-SE-ZA-1700 FF, SDR-2-CON-SE-ZA-1710 FF, SDR-2-CON-SE-ZA-1770 FF, SDR-2-CON-SE-ZA-1780 FF, SDR-2-CON-SE-ZA-1800 FF, SDR-2-CON-SE-ZA-1810 FF, SDR-2-CON-SE-ZA-1870 FF, SDR-2-CON-SE-ZA-1880 FF, SDR-2-CON-SE-ZA-1900 FF, SDR-2-CON-SE-ZA-1910 FF, SDR-2-CON-SE-ZA-1970 FF, SDR-2-CON-SE-ZA-2000 FF, SDR-2-CON-SE-ZA-2110 FF, SDR-2-CON-SE-ZA-2180 FF, SDR-2-CON-SE-ZA-2210 FF, SDR-2-CON-SE-ZA-2310 FF, SDR-2-CON-SE-ZA-2410 FF, SDR-2-CON-TS-ZA-1000 FF, SDR-2-CON-TS-ZA-3100 FF, SDR-2-CON-TS-ZA-3130 FF, SDR-2-CON-TS-ZA-3110 FF, SDR-2-CON-TS-ZA-3120 FF, SDR-2-CON-TS-ZA-3140 FF, SDR-2-CON-TS-ZA-2300 FF, SDR-2-CON-TS-ZA-2380 FF, SDR-2-CON-TS-ZA-2310 FF, SDR-2-CON-TS-ZA-2400 FF, SDR-2-CON-TS-ZA-2900 FF, SDR-2-CON-TS-ZA-3000 FF, SDR-2-CON-TS-ZA-2500 FF, SDR-2-CON-PW-ZA-1000 FF, SDR-2-CON-PW-ZA-2200 FF, SDR-2-CON-PW-ZA-1010 FF, SDR-2-CON-PW-ZA-2260 FF, SDR-2-CON-PW-ZA-2340 FF, SDR-2-CON-PW-ZA-2270 FF, SDR-2-CON-PW-ZA-2330 FF, SDR-2-CON-PW-ZA-2350 FF, SDR-2-CON-PW-ZG-1500 FF, SDR-2-CON-PW-ZG-1010 FF, SDR-2-CON-PW-ZA-2940 FF, SDR-2-CON-PW-ZA-2920 FF, SDR-2-CON-PW-ZA-3040 FF, SDR-2-CON-PW-ZA-3140 FF, SDR-2-CON-PW-ZA-2640 FF, SDR-2-CON-PW-ZA-2570 FF, SDR-2-CON-SL-ZA-1000 FF, SDR-2-CON-SL-ZA-1010 FF, SDR-2-CON-SL-ZA-2870 FF, SDR-2-CON-SL-ZA-2880 FF, SDR-2-CON-SL-ZA-1300 FF, SDR-2-CON-SL-ZA-1310 FF, SDR-2-CON-SL-ZA-2950 FF, SDR-2-CON-SL-ZA-2960 FF, SDR-2-CON-SL-ZA-2990 FF, SDR-2-CON-SL-ZA-3000 FF, SDR-2-CON-SL-ZA-3030 FF, SDR-2-CON-SL-ZA-3040 FF, SDR-2-CON-SL-ZA-3070 FF, SDR-2-CON-SL-ZA-3080 FF, SDR-2-CON-SL-ZA-3110 FF, SDR-2-CON-SL-ZA-3120 FF, SDR-2-CON-SL-ZA-3150 FF, SDR-2-CON-SL-ZA-3160 FF, SDR-2-CON-SL-ZA-3190 FF, SDR-2-CON-SL-ZA-3200 FF, SDR-2-CON-SL-ZA-2910 FF, SDR-2-CON-SL-ZA-2920 FF, SDR-2-CON-MV-ZA-1000 FF, SDR-2-CON-MV-ZA-1070 FF, SDR-2-CON-MV-ZA-1150 FF, SDR-2-CON-MV-ZA-1160 FF, SDR-2-CON-MV-ZA-1170 FF, SDR-2-CON-MV-ZA-1200 FF, SDR-2-CON-MV-ZA-1210 FF, SDR-2-CON-MV-ZA-1240 FF, SDR-2-CON-MV-ZA-1250 FF, SDR-2-CON-TE-ZA-1030 FF, SDR-2-CON-TE-ZA-1850 FF, SDR-2-CON-TE-ZA-3210 FF, SDR-2-CON-TE-ZA-3220 FF, SDR-2-CON-TE-ZA-3230 FF, SDR-2-CON-TE-ZA-3240 FF, SDR-2-CON-TE-ZA-3290 FF, SDR-2-CON-TE-ZA-3250 FF, SDR-2-CON-TE-ZA-3300 FF, SDR-2-CON-TE-ZA-3330 FF, SDR-2-CON-TE-ZA-3390 FF, SDR-2-CON-TE-ZA-3420 FF, SDR-2-CON-TE-ZA-3480 FF, SDR-2-CON-TE-ZA-3490 FF, SDR-2-CON-TE-ZA-3510 FF, SDR-2-CON-TE-ZA-3560 FF, SDR-2-CON-TE-ZA-3570 FF, SDR-2-CON-TE-ZA-3580 FF, SDR-2-CON-TE-ZA-3600 FF, SDR-2-CON-TE-ZA-3650 FF, SDR-2-CON-TE-ZA-3660 FF, SDR-2-CON-TE-ZA-3670 FF, SDR-2-CON-TE-ZA-3750 FF, SDR-2-CON-TE-ZA-3760 FF, SDR-2-CON-TE-ZA-3840 FF, SDR-2-CON-TE-ZA-3850 FF, SDR-2-CON-TE-ZA-3930 FF, SDR-2-CON-TE-ZA-4020 FF, SDR-2-CON-TE-ZA-4110 FF, SDR-2-CON-TE-ZA-4120 FF, SDR-2-CON-TE-ZA-4140 FF, SDR-2-CON-TE-ZA-4190 FF, SDR-2-CON-TE-ZA-4150 FF, SDR-2-CON-SL-ZA-3230 FF, SDR-2-CON-SL-ZA-3240 FF, SDR-2-CON-SL-ZA-3270 FF, SDR-2-CON-SL-ZA-3280 FF, SDR-2-CON-SL-ZA-3310 FF, SDR-2-CON-SL-ZA-3320 FF, SDR-2-CON-SL-ZA-3350 FF, SDR-2-CON-SL-ZA-3360 FF, SDR-2-CON-SL-ZA-3390 FF, SDR-2-CON-SL-ZA-3400 FF, SDR-2-CON-SL-ZA-3420 FF, SDR-2-CON-SL-ZA-3410 FF, SDR-2-CON-MV-ZA-1280 FF, SDR-2-CON-MV-ZA-1290 FF, SDR-2-CON-MV-ZA-1310 FF, SDR-2-CON-MV-ZA-1320 FF, SDR-2-CON-MV-ZA-1330 FF, SDR-2-CON-MV-ZA-1350 FF, SDR-2-CON-TE-ZA-4200 FF, SDR-2-CON-TE-ZA-4210 FF, SDR-2-CON-TE-ZA-4230 FF, SDR-2-CON-TE-ZA-4280 FF, SDR-2-CON-TE-ZA-4240 FF, SDR-2-CON-TE-ZA-4250 FF, SDR-2-CON-TE-ZA-4300 FF, SDR-2-CON-TE-ZA-4310 FF, SDR-2-CON-TE-ZA-4360 FF, SDR-2-CON-TE-ZA-4320 FF, SDR-2-CON-TE-ZA-4370 FF, SDR-2-CON-TE-ZA-4330 FF, SDR-2-CON-TE-ZA-4380 FF, SDR-2-CON-TE-ZA-4390 FF, SDR-2-CON-TE-ZA-4400 FF, SDR-2-CON-TE-ZA-4450 FF, SDR-2-CON-TE-ZA-4410 FF, SDR-2-CON-TE-ZA-4460 FF, SDR-2-CON-TE-ZA-4420 FF, SDR-2-CON-TE-ZA-4470 FF, SDR-2-CON-TE-ZA-4480 FF, SDR-2-CON-TE-ZA-4490 FF, SDR-2-CON-TE-ZA-4540 FF, SDR-2-CON-TE-ZA-4500 FF, SDR-2-CON-TE-ZA-4550 FF, SDR-2-CON-TE-ZA-4510 FF, SDR-2-CON-CC-ZA-1000 FF, SDR-2-CON-CC-ZA-1030 FF, SDR-2-CON-CC-ZA-1080 FF, SDR-2-CON-CC-ZA-1090 FF, SDR-2-CON-CC-ZA-1240 FF, SDR-2-CON-CC-ZA-1250 FF, SDR-2-CON-CC-ZA-1380 FF, SDR-2-CON-CC-ZA-1390 FF, SDR-2-CON-CC-ZA-1670 FF, SDR-2-CON-CC-ZA-1700 FF, SDR-2-CON-CC-ZA-1750 FF, SDR-2-CON-CC-ZA-1790 FF, SDR-2-CON-CC-ZA-1830 FF, SDR-2-CON-ST-ZA-4020 FF, SDR-2-CON-SE-ZA-1430 FF, SDR-2-CON-SE-ZA-1440 FF, SDR-2-CON-SE-ZA-1530 FF, SDR-2-CON-SE-ZA-1540 FF, SDR-2-CON-SE-ZA-1630 FF, SDR-2-CON-SE-ZA-1730 FF, SDR-2-CON-SE-ZA-1740 FF, SDR-2-CON-SE-ZA-1830 FF, SDR-2-CON-SE-ZA-1840 FF, SDR-2-CON-SE-ZA-1930 FF, SDR-2-CON-SE-ZA-1940 FF, SDR-2-CON-SE-ZA-1980 FF, SDR-2-CON-SE-ZA-2030 FF, SDR-2-CON-SE-ZA-2010 FF, SDR-2-CON-SE-ZA-2040 FF, SDR-2-CON-TS-ZA-1900 FF, SDR-2-CON-TS-ZA-1010 FF, SDR-2-CON-TS-ZA-1080 FF, SDR-2-CON-TS-ZA-1910 FF, SDR-2-CON-TS-ZA-1040 FF, SDR-2-CON-TS-ZA-1020 FF, SDR-2-CON-TS-ZA-1050 FF, SDR-2-CON-TS-ZA-1060 FF, SDR-2-CON-TS-ZA-1070 FF, SDR-2-CON-TS-ZA-2200 FF, SDR-2-CON-TS-ZA-2280 FF, SDR-2-CON-TS-ZA-2210 FF, SDR-2-CON-TS-ZA-2270 FF, SDR-2-CON-TS-ZA-2290 FF, SDR-2-CON-TS-ZA-2230 FF, SDR-2-CON-TS-ZA-2240 FF, SDR-2-CON-TS-ZA-2250 FF, SDR-2-CON-TS-ZA-2260 FF, SDR-2-CON-TS-ZA-1180 FF, SDR-2-CON-TS-ZA-1920 FF, SDR-2-CON-TS-ZA-1190 FF, SDR-2-CON-TS-ZA-1260 FF, SDR-2-CON-TS-ZA-1930 FF, SDR-2-CON-TS-ZA-2010 FF, SDR-2-CON-TS-ZA-2000 FF, SDR-2-CON-TS-ZA-2020 FF, SDR-2-CON-TS-ZA-2030 FF, SDR-2-CON-TS-ZA-2040 FF, SDR-2-CON-TS-ZA-1270 FF, SDR-2-CON-TS-ZA-1940 FF, SDR-2-CON-TS-ZA-1280 FF, SDR-2-CON-TS-ZA-1350 FF, SDR-2-CON-TS-ZA-1950 FF, SDR-2-CON-TS-ZA-2060 FF, SDR-2-CON-TS-ZA-2050 FF, SDR-2-CON-TS-ZA-2070 FF, SDR-2-CON-TS-ZA-2080 FF, SDR-2-CON-TS-ZA-2090 FF, SDR-2-CON-TS-ZA-2600 FF, SDR-2-CON-TS-ZA-2630 FF, SDR-2-CON-TS-ZA-2610 FF, SDR-2-CON-TS-ZA-2620 FF, SDR-2-CON-TS-ZA-2640 FF, SDR-2-CON-TS-ZA-2660 FF, SDR-2-CON-TS-ZA-2650 FF, SDR-2-CON-TS-ZA-2670 FF, SDR-2-CON-TS-ZA-2680 FF, SDR-2-CON-TS-ZA-2690 FF, SDR-2-CON-TS-ZA-2700 FF, SDR-2-CON-TS-ZA-2730 FF, SDR-2-CON-TS-ZA-2710 FF, SDR-2-CON-TS-ZA-2720 FF, SDR-2-CON-TS-ZA-2740 FF, SDR-2-CON-TS-ZA-2760 FF, SDR-2-CON-TS-ZA-2750 FF, SDR-2-CON-TS-ZA-2770 FF, SDR-2-CON-TS-ZA-2780 FF, SDR-2-CON-TS-ZA-2800 FF, SDR-2-CON-TS-ZA-2830 FF, SDR-2-CON-TS-ZA-2810 FF, SDR-2-CON-TS-ZA-2820 FF, SDR-2-CON-TS-ZA-2840 FF, SDR-2-CON-TS-ZA-2860 FF, SDR-2-CON-TS-ZA-2850 FF, SDR-2-CON-TS-ZA-2870 FF, SDR-2-CON-TS-ZA-2880 FF, SDR-2-CON-TS-ZA-2890 FF, SDR-2-CON-TS-ZA-1630 FF, SDR-2-CON-TS-ZA-1960 FF, SDR-2-CON-TS-ZA-1640 FF, SDR-2-CON-TS-ZA-1710 FF, SDR-2-CON-TS-ZA-1970 FF, SDR-2-CON-TS-ZA-2110 FF, SDR-2-CON-TS-ZA-2100 FF, SDR-2-CON-TS-ZA-2120 FF, SDR-2-CON-TS-ZA-2130 FF, SDR-2-CON-TS-ZA-2140 FF, SDR-2-CON-TS-ZA-1720 FF, SDR-2-CON-TS-ZA-1980 FF, SDR-2-CON-TS-ZA-1730 FF, SDR-2-CON-TS-ZA-1800 FF, SDR-2-CON-TS-ZA-1990 FF, SDR-2-CON-TS-ZA-2160 FF, SDR-2-CON-TS-ZA-2150 FF, SDR-2-CON-TS-ZA-2170 FF, SDR-2-CON-TS-ZA-2180 FF, SDR-2-CON-TS-ZA-2190 FF, SDR-2-CON-TS-ZA-3160 FF, SDR-2-CON-TS-ZA-3150 FF, SDR-2-CON-TS-ZA-3170 FF, SDR-2-CON-TS-ZA-3180 FF, SDR-2-CON-TS-ZA-3190 FF, SDR-2-CON-TS-ZA-2370 FF, SDR-2-CON-TS-ZA-2390 FF, SDR-2-CON-TS-ZA-2330 FF, SDR-2-CON-TS-ZA-2320 FF, SDR-2-CON-TS-ZA-2340 FF, SDR-2-CON-TS-ZA-2350 FF, SDR-2-CON-TS-ZA-2360 FF, SDR-2-CON-TS-ZA-2430 FF, SDR-2-CON-TS-ZA-2410 FF, SDR-2-CON-TS-ZA-2420 FF, SDR-2-CON-TS-ZA-2440 FF, SDR-2-CON-TS-ZA-2460 FF, SDR-2-CON-TS-ZA-2450 FF, SDR-2-CON-TS-ZA-2470 FF, SDR-2-CON-TS-ZA-2480 FF, SDR-2-CON-TS-ZA-2490 FF, SDR-2-CON-TS-ZA-2930 FF, SDR-2-CON-TS-ZA-2910 FF, SDR-2-CON-TS-ZA-2920 FF, SDR-2-CON-TS-ZA-2940 FF, SDR-2-CON-TS-ZA-2960 FF, SDR-2-CON-TS-ZA-2950 FF, SDR-2-CON-TS-ZA-2970 FF, SDR-2-CON-TS-ZA-2980 FF, SDR-2-CON-TS-ZA-2990 FF, SDR-2-CON-TS-ZA-3030 FF, SDR-2-CON-TS-ZA-3010 FF, SDR-2-CON-TS-ZA-3020 FF, SDR-2-CON-TS-ZA-3040 FF, SDR-2-CON-TS-ZA-3060 FF, SDR-2-CON-TS-ZA-3050 FF, SDR-2-CON-TS-ZA-3080 FF, SDR-2-CON-TS-ZA-3090 FF, SDR-2-CON-TS-ZA-2530 FF, SDR-2-CON-TS-ZA-2510 FF, SDR-2-CON-TS-ZA-2520 FF, SDR-2-CON-TS-ZA-2560 FF, SDR-2-CON-TS-ZA-2550 FF, SDR-2-CON-TS-ZA-2570 FF, SDR-2-CON-TS-ZA-2580 FF, SDR-2-CON-TS-ZA-2590 FF, SDR-2-CON-PW-ZA-1080 FF, SDR-2-CON-PW-ZA-2210 FF, SDR-2-CON-PW-ZA-1040 FF, SDR-2-CON-PW-ZA-1020 FF, SDR-2-CON-PW-ZA-1050 FF, SDR-2-CON-PW-ZA-1030 FF, SDR-2-CON-PW-ZA-1070 FF, SDR-2-CON-PW-ZA-2300 FF, SDR-2-CON-PW-ZA-2280 FF, SDR-2-CON-PW-ZA-2310 FF, SDR-2-CON-PW-ZA-2290 FF, SDR-2-CON-PW-ZA-1200 FF, SDR-2-CON-PW-ZA-2220 FF, SDR-2-CON-PW-ZA-1210 FF, SDR-2-CON-PW-ZA-1280 FF, SDR-2-CON-PW-ZA-2230 FF, SDR-2-CON-PW-ZA-2680 FF, SDR-2-CON-PW-ZA-2660 FF, SDR-2-CON-PW-ZA-2690 FF, SDR-2-CON-PW-ZA-2670 FF, SDR-2-CON-PW-ZA-2700 FF, SDR-2-CON-PW-ZA-2710 FF, SDR-2-CON-PW-ZA-2740 FF, SDR-2-CON-PW-ZA-2720 FF, SDR-2-CON-PW-ZA-2730 FF, SDR-2-CON-PW-ZA-2750 FF, SDR-2-CON-PW-ZA-2780 FF, SDR-2-CON-PW-ZA-2760 FF, SDR-2-CON-PW-ZA-2790 FF, SDR-2-CON-PW-ZA-2770 FF, SDR-2-CON-PW-ZA-2800 FF, SDR-2-CON-PW-ZA-1400 FF, SDR-2-CON-PW-ZA-2240 FF, SDR-2-CON-PW-ZA-1410 FF, SDR-2-CON-PW-ZA-1480 FF, SDR-2-CON-PW-ZA-2250 FF, SDR-2-CON-PW-ZA-3230 FF, SDR-2-CON-PW-ZA-3210 FF, SDR-2-CON-PW-ZA-3240 FF, SDR-2-CON-PW-ZA-3220 FF, SDR-2-CON-PW-ZA-3250 FF, SDR-2-CON-PW-ZA-3260 FF, SDR-2-CON-PW-ZA-3290 FF, SDR-2-CON-PW-ZA-3270 FF, SDR-2-CON-PW-ZA-3280 FF, SDR-2-CON-PW-ZA-3300 FF, SDR-2-CON-PW-ZA-3330 FF, SDR-2-CON-PW-ZA-3310 FF, SDR-2-CON-PW-ZA-3340 FF, SDR-2-CON-PW-ZA-3320 FF, SDR-2-CON-PW-ZA-3350 FF, SDR-2-CON-PW-ZA-3360 FF, SDR-2-CON-PW-ZA-3390 FF, SDR-2-CON-PW-ZA-3370 FF, SDR-2-CON-PW-ZA-3380 FF, SDR-2-CON-PW-ZA-3400 FF, SDR-2-CON-PW-ZA-3430 FF, SDR-2-CON-PW-ZA-3410 FF, SDR-2-CON-PW-ZA-3440 FF, SDR-2-CON-PW-ZA-3420 FF, SDR-2-CON-PW-ZA-3450 FF, SDR-2-CON-PW-ZA-3460 FF, SDR-2-CON-PW-ZA-3490 FF, SDR-2-CON-PW-ZA-3470 FF, SDR-2-CON-PW-ZA-3480 FF, SDR-2-CON-PW-ZA-3500 FF, SDR-2-CON-PW-ZA-3530 FF, SDR-2-CON-PW-ZA-3510 FF, SDR-2-CON-PW-ZA-3540 FF, SDR-2-CON-PW-ZA-3520 FF, SDR-2-CON-PW-ZA-3550 FF, SDR-2-CON-PW-ZA-3560 FF, SDR-2-CON-PW-ZA-3590 FF, SDR-2-CON-PW-ZA-3570 FF, SDR-2-CON-PW-ZA-3580 FF, SDR-2-CON-PW-ZA-3600 FF, SDR-2-CON-PW-ZA-3630 FF, SDR-2-CON-PW-ZA-3610 FF, SDR-2-CON-PW-ZA-3640 FF, SDR-2-CON-PW-ZA-3620 FF, SDR-2-CON-PW-ZA-3650 FF, SDR-2-CON-PW-ZA-2810 FF, SDR-2-CON-PW-ZA-2840 FF, SDR-2-CON-PW-ZA-2820 FF, SDR-2-CON-PW-ZA-2830 FF, SDR-2-CON-PW-ZA-2850 FF, SDR-2-CON-PW-ZA-2880 FF, SDR-2-CON-PW-ZA-2860 FF, SDR-2-CON-PW-ZA-2890 FF, SDR-2-CON-PW-ZA-2870 FF, SDR-2-CON-PW-ZA-2900 FF, SDR-2-CON-PW-ZA-2360 FF, SDR-2-CON-PW-ZA-2440 FF, SDR-2-CON-PW-ZA-2370 FF, SDR-2-CON-PW-ZA-2430 FF, SDR-2-CON-PW-ZA-2450 FF, SDR-2-CON-PW-ZA-2400 FF, SDR-2-CON-PW-ZA-2380 FF, SDR-2-CON-PW-ZA-2410 FF, SDR-2-CON-PW-ZA-2390 FF, SDR-2-CON-PW-ZA-2420 FF, SDR-2-CON-PW-ZA-2460 FF, SDR-2-CON-PW-ZA-2540 FF, SDR-2-CON-PW-ZA-2470 FF, SDR-2-CON-PW-ZA-2530 FF, SDR-2-CON-PW-ZA-2550 FF, SDR-2-CON-PW-ZA-2500 FF, SDR-2-CON-PW-ZA-2480 FF, SDR-2-CON-PW-ZA-2510 FF, SDR-2-CON-PW-ZA-2490 FF, SDR-2-CON-PW-ZA-2520 FF, SDR-2-CON-PW-ZG-1080 FF, SDR-2-CON-PW-ZG-1510 FF, SDR-2-CON-PW-ZA-3680 FF, SDR-2-CON-PW-ZA-3660 FF, SDR-2-CON-PW-ZA-3690 FF, SDR-2-CON-PW-ZA-3670 FF, SDR-2-CON-PW-ZA-3700 FF, SDR-2-CON-PW-ZA-2930 FF, SDR-2-CON-PW-ZA-2950 FF, SDR-2-CON-PW-ZA-2980 FF, SDR-2-CON-PW-ZA-2960 FF, SDR-2-CON-PW-ZA-2990 FF, SDR-2-CON-PW-ZA-2970 FF, SDR-2-CON-PW-ZA-3030 FF, SDR-2-CON-PW-ZA-3050 FF, SDR-2-CON-PW-ZA-3080 FF, SDR-2-CON-PW-ZA-3060 FF, SDR-2-CON-PW-ZA-3090 FF, SDR-2-CON-PW-ZA-3070 FF, SDR-2-CON-PW-ZA-3100 FF, SDR-2-CON-PW-ZA-3130 FF, SDR-2-CON-PW-ZA-3150 FF, SDR-2-CON-PW-ZA-3180 FF, SDR-2-CON-PW-ZA-3160 FF, SDR-2-CON-PW-ZA-3190 FF, SDR-2-CON-PW-ZA-3170 FF, SDR-2-CON-PW-ZA-3200 FF, SDR-2-CON-PW-ZA-2630 FF, SDR-2-CON-PW-ZA-2650 FF, SDR-2-CON-PW-ZA-2600 FF, SDR-2-CON-PW-ZA-2580 FF, SDR-2-CON-PW-ZA-2610 FF, SDR-2-CON-PW-ZA-2590 FF, SDR-2-CON-PW-ZA-2620 FF, SDR-2-CON-SL-ZA-1110 FF, SDR-2-CON-SL-ZA-1100 FF, SDR-2-CON-SL-ZA-2900 FF, SDR-2-CON-SL-ZA-2890 FF, SDR-2-CON-SL-ZA-1410 FF, SDR-2-CON-SL-ZA-1400 FF, SDR-2-CON-SL-ZA-2980 FF, SDR-2-CON-SL-ZA-2970 FF, SDR-2-CON-SL-ZA-3020 FF, SDR-2-CON-SL-ZA-3010 FF, SDR-2-CON-SL-ZA-3060 FF, SDR-2-CON-SL-ZA-3050 FF, SDR-2-CON-SL-ZA-3100 FF, SDR-2-CON-SL-ZA-3090 FF, SDR-2-CON-SL-ZA-3140 FF, SDR-2-CON-SL-ZA-3130 FF, SDR-2-CON-SL-ZA-3180 FF, SDR-2-CON-SL-ZA-3170 FF, SDR-2-CON-SL-ZA-3220 FF, SDR-2-CON-SL-ZA-3210 FF, SDR-2-CON-SL-ZA-2940 FF, SDR-2-CON-SL-ZA-2930 FF, SDR-2-CON-SL-ZA-2650 FF, SDR-2-CON-SL-ZA-2760 FF, SDR-2-CON-SL-ZA-2770 FF, SDR-2-CON-SL-ZA-2780 FF, SDR-2-CON-SL-ZA-2660 FF, SDR-2-CON-SL-ZA-2790 FF, SDR-2-CON-SL-ZA-2800 FF, SDR-2-CON-SL-ZA-2670 FF, SDR-2-CON-SL-ZA-2810 FF, SDR-2-CON-SL-ZA-2820 FF, SDR-2-CON-SL-ZA-2680 FF, SDR-2-CON-SL-ZA-2830 FF, SDR-2-CON-SL-ZA-2840 FF, SDR-2-CON-SL-ZA-2690 FF, SDR-2-CON-SL-ZA-2850 FF, SDR-2-CON-SL-ZA-2860 FF, SDR-2-CON-MV-ZA-1100 FF, SDR-2-CON-MV-ZA-1190 FF, SDR-2-CON-MV-ZA-1180 FF, SDR-2-CON-MV-ZA-1230 FF, SDR-2-CON-MV-ZA-1220 FF, SDR-2-CON-MV-ZA-1270 FF, SDR-2-CON-MV-ZA-1260 FF, SDR-2-CON-TE-ZA-1000 FF, SDR-2-CON-TE-ZA-1010 FF, SDR-2-CON-TE-ZA-1020 FF, SDR-2-CON-TE-ZA-1840 FF, SDR-2-CON-TE-ZA-1040 FF, SDR-2-CON-TE-ZA-1050 FF, SDR-2-CON-TE-ZA-1060 FF, SDR-2-CON-TE-ZA-3280 FF, SDR-2-CON-TE-ZA-3260 FF, SDR-2-CON-TE-ZA-3270 FF, SDR-2-CON-TE-ZA-3310 FF, SDR-2-CON-TE-ZA-3320 FF, SDR-2-CON-TE-ZA-3370 FF, SDR-2-CON-TE-ZA-3380 FF, SDR-2-CON-TE-ZA-3340 FF, SDR-2-CON-TE-ZA-3350 FF, SDR-2-CON-TE-ZA-3360 FF, SDR-2-CON-TE-ZA-3400 FF, SDR-2-CON-TE-ZA-3410 FF, SDR-2-CON-TE-ZA-3460 FF, SDR-2-CON-TE-ZA-3470 FF, SDR-2-CON-TE-ZA-3430 FF, SDR-2-CON-TE-ZA-3440 FF, SDR-2-CON-TE-ZA-3450 FF, SDR-2-CON-TE-ZA-3500 FF, SDR-2-CON-TE-ZA-3550 FF, SDR-2-CON-TE-ZA-3520 FF, SDR-2-CON-TE-ZA-3530 FF, SDR-2-CON-TE-ZA-3540 FF, SDR-2-CON-TE-ZA-3590 FF, SDR-2-CON-TE-ZA-3640 FF, SDR-2-CON-TE-ZA-3610 FF, SDR-2-CON-TE-ZA-3620 FF, SDR-2-CON-TE-ZA-3630 FF, SDR-2-CON-TE-ZA-3680 FF, SDR-2-CON-TE-ZA-3730 FF, SDR-2-CON-TE-ZA-3690 FF, SDR-2-CON-TE-ZA-3740 FF, SDR-2-CON-TE-ZA-3700 FF, SDR-2-CON-TE-ZA-3710 FF, SDR-2-CON-TE-ZA-3720 FF, SDR-2-CON-TE-ZA-3770 FF, SDR-2-CON-TE-ZA-3820 FF, SDR-2-CON-TE-ZA-3780 FF, SDR-2-CON-TE-ZA-3830 FF, SDR-2-CON-TE-ZA-3790 FF, SDR-2-CON-TE-ZA-3800 FF, SDR-2-CON-TE-ZA-3810 FF, SDR-2-CON-TE-ZA-3860 FF, SDR-2-CON-TE-ZA-3910 FF, SDR-2-CON-TE-ZA-3870 FF, SDR-2-CON-TE-ZA-3920 FF, SDR-2-CON-TE-ZA-3880 FF, SDR-2-CON-TE-ZA-3890 FF, SDR-2-CON-TE-ZA-3900 FF, SDR-2-CON-TE-ZA-3940 FF, SDR-2-CON-TE-ZA-3950 FF, SDR-2-CON-TE-ZA-4000 FF, SDR-2-CON-TE-ZA-3960 FF, SDR-2-CON-TE-ZA-4010 FF, SDR-2-CON-TE-ZA-3970 FF, SDR-2-CON-TE-ZA-3980 FF, SDR-2-CON-TE-ZA-3990 FF, SDR-2-CON-TE-ZA-4030 FF, SDR-2-CON-TE-ZA-4040 FF, SDR-2-CON-TE-ZA-4090 FF, SDR-2-CON-TE-ZA-4050 FF, SDR-2-CON-TE-ZA-4100 FF, SDR-2-CON-TE-ZA-4060 FF, SDR-2-CON-TE-ZA-4070 FF, SDR-2-CON-TE-ZA-4080 FF, SDR-2-CON-TE-ZA-4130 FF, SDR-2-CON-TE-ZA-4180 FF, SDR-2-CON-TE-ZA-4160 FF, SDR-2-CON-TE-ZA-4170 FF, SDR-2-CON-SL-ZA-3260 FF, SDR-2-CON-SL-ZA-3250 FF, SDR-2-CON-SL-ZA-3300 FF, SDR-2-CON-SL-ZA-3290 FF, SDR-2-CON-SL-ZA-3340 FF, SDR-2-CON-SL-ZA-3330 FF, SDR-2-CON-SL-ZA-3380 FF, SDR-2-CON-SL-ZA-3370 FF, SDR-2-CON-SL-ZA-3430 FF, SDR-2-CON-SL-ZA-3440 FF, SDR-2-CON-SL-ZA-3450 FF, SDR-2-CON-SL-ZA-3460 FF, SDR-2-CON-SL-ZA-3470 FF, SDR-2-CON-SL-ZA-3480 FF, SDR-2-CON-SL-ZA-3490 FF, SDR-2-CON-SL-ZA-3500 FF, SDR-2-CON-SL-ZA-3510 FF, SDR-2-CON-SL-ZA-3520 FF, SDR-2-CON-SL-ZA-3530 FF, SDR-2-CON-SL-ZA-3540 FF, SDR-2-CON-SL-ZA-3550 FF, SDR-2-CON-SL-ZA-3560 FF, SDR-2-CON-SL-ZA-3570 FF, SDR-2-CON-SL-ZA-3580 FF, SDR-2-CON-MV-ZA-1300 FF, SDR-2-CON-MV-ZA-1340 FF, SDR-2-CON-TE-ZA-4220 FF, SDR-2-CON-TE-ZA-4270 FF, SDR-2-CON-TE-ZA-4260 FF, SDR-2-CON-TE-ZA-4340 FF, SDR-2-CON-TE-ZA-4350 FF, SDR-2-CON-TE-ZA-4430 FF, SDR-2-CON-TE-ZA-4440 FF, SDR-2-CON-TE-ZA-4520 FF, SDR-2-CON-TE-ZA-4530 FF, SDR-2-CON-CC-ZA-1050 FF, SDR-2-CON-CC-ZA-1060 FF, SDR-2-CON-CC-ZA-1100 FF, SDR-2-CON-CC-ZA-1110 FF, SDR-2-CON-CC-ZA-1260 FF, SDR-2-CON-CC-ZA-1270 FF, SDR-2-CON-CC-ZA-1400 FF, SDR-2-CON-CC-ZA-1410 FF, SDR-2-CON-CC-ZA-1500 FF, SDR-2-CON-CC-ZA-1510 FF, SDR-2-CON-CC-ZA-1520 FF, SDR-2-CON-CC-ZA-1530 FF, SDR-2-CON-CC-ZA-1540 FF, SDR-2-CON-CC-ZA-1550 FF, SDR-2-CON-CC-ZA-1560 FF, SDR-2-CON-CC-ZA-1570 FF, SDR-2-CON-CC-ZA-1580 FF, SDR-2-CON-CC-ZA-1590 FF, SDR-2-CON-CC-ZA-1610 FF, SDR-2-CON-CC-ZA-1620 FF, SDR-2-CON-CC-ZA-1630 FF, SDR-2-CON-CC-ZA-1640 FF, SDR-2-CON-CC-ZA-1650 FF, SDR-2-CON-CC-ZA-1660 FF, SDR-2-CON-CC-ZA-1720 FF, SDR-2-CON-CC-ZA-1730 FF, SDR-2-CON-CC-ZA-1760 FF, SDR-2-CON-CC-ZA-1770 FF, SDR-2-CON-CC-ZA-1780 FF, SDR-2-CON-CC-ZA-1800 FF, SDR-2-CON-CC-ZA-1810 FF, SDR-2-CON-CC-ZA-1820 FF, SDR-2-CON-CC-ZA-1840 FF, SDR-2-CON-CC-ZA-1850 FF, SDR-2-CON-CC-ZA-1860 FF, SDR-2-CON-CC-ZG-1500 FF, SDR-2-CON-CC-ZG-1540 FF, SDR-2-CON-CC-ZG-1550 FF, SDR-2-CON-CC-ZG-1510 FF, SDR-2-CON-CC-ZG-1560 FF, SDR-2-CON-CC-ZG-1570 FF, SDR-2-CON-CC-ZG-1580 FF, SDR-2-CON-CC-ZG-1520 FF, SDR-2-CON-CC-ZG-1590 FF, SDR-2-CON-CC-ZG-1530 FF, SDR-2-CON-CC-ZG-1600 FF, SDR-2-CON-CC-ZG-1610 FF, SDR-2-CON-CC-ZG-1620 FF, SDR-2-CON-CC-ZG-1630 FF, SDR-2-CON-CC-ZG-1640 FF, SDR-2-CON-CC-ZG-1650 FF, SDR-2-CON-CC-ZG-1660 FF, SDR-2-CON-SE-ZA-2690 FF, SDR-2-MILS-1050 FF, SDR-2-CON-ST-ZA-5970 FF, SDR-2-CON-ST-ZA-5220 FF, SDR-2-CON-SE-ZA-1000, SDR-2-CON-SE-ZA-1420, SDR-2-CON-SE-ZA-1030, SDR-2-CON-SE-ZA-1450, SDR-2-CON-SE-ZA-1460, SDR-2-CON-SE-ZA-1520 → SDR-2-CON-SE-ZA-1490, SDR-2-CON-SE-ZA-1550, SDR-2-CON-SE-ZA-1560, SDR-2-CON-SE-ZA-1620, SDR-2-CON-SE-ZA-1590, SDR-2-CON-SE-ZA-1650, SDR-2-CON-SE-ZA-1660, SDR-2-CON-SE-ZA-1720, SDR-2-CON-SE-ZA-1690, SDR-2-CON-SE-ZA-1750, SDR-2-CON-SE-ZA-1760, SDR-2-CON-SE-ZA-1820, SDR-2-CON-SE-ZA-1790, SDR-2-CON-SE-ZA-1850, SDR-2-CON-SE-ZA-1860, SDR-2-CON-SE-ZA-1920, SDR-2-CON-SE-ZA-1890, SDR-2-CON-SE-ZA-1950, SDR-2-CON-SE-ZA-1960, SDR-2-CON-SE-ZA-2020, SDR-2-CON-SE-ZA-1990, SDR-2-CON-SE-ZA-2050, SDR-2-CON-SE-ZA-2060, SDR-2-CON-SE-ZA-2120, SDR-2-CON-SE-ZA-2070, SDR-2-CON-SE-ZA-2080, SDR-2-CON-SE-ZA-2130, SDR-2-CON-SE-ZA-2090, SDR-2-CON-SE-ZA-2150, SDR-2-CON-SE-ZA-2100, SDR-2-CON-SE-ZA-2140, SDR-2-CON-SE-ZA-2160, SDR-2-CON-SE-ZA-2220, SDR-2-CON-SE-ZA-2170, SDR-2-CON-SE-ZA-2230, SDR-2-CON-SE-ZA-2190, SDR-2-CON-SE-ZA-2250, SDR-2-CON-SE-ZA-2200, SDR-2-CON-SE-ZA-2240, SDR-2-CON-SE-ZA-2260, SDR-2-CON-SE-ZA-2320, SDR-2-CON-SE-ZA-2270, SDR-2-CON-SE-ZA-2280, SDR-2-CON-SE-ZA-2330, SDR-2-CON-SE-ZA-2290, SDR-2-CON-SE-ZA-2350, SDR-2-CON-SE-ZA-2300, SDR-2-CON-SE-ZA-2340, SDR-2-CON-SE-ZA-2360, SDR-2-CON-SE-ZA-2420, SDR-2-CON-SE-ZA-2370, SDR-2-CON-SE-ZA-2380, SDR-2-CON-SE-ZA-2430, SDR-2-CON-SE-ZA-2390, SDR-2-CON-SE-ZA-2450, SDR-2-CON-SE-ZA-2400, SDR-2-CON-SE-ZA-2440, SDR-2-CON-PW-ZG-1000, SDR-2-CON-PW-ZA-2910, SDR-2-CON-PW-ZA-3010, SDR-2-CON-PW-ZA-3020, SDR-2-CON-PW-ZA-3110, SDR-2-CON-PW-ZA-3120, SDR-2-CON-PW-ZA-2560, SDR-2-CON-TE-ZA-4290, SDR-2-CON-RW-ZA-1720, SDR-2-CON-RW-ZA-1720 FF, SDR-2-CON-ST-ZA-6120, SDR-2-CON-SE-ZA-1010 FF, SDR-2-CON-SE-ZA-1020 FF, SDR-2-CON-SE-ZA-1040 FF, SDR-2-CON-SE-ZA-1050 FF, SDR-2-CON-SE-ZA-1470 FF, SDR-2-CON-SE-ZA-1480 FF, SDR-2-CON-SE-ZA-1500 FF, SDR-2-CON-SE-ZA-1510 FF, SDR-2-CON-SE-ZA-1570 FF, SDR-2-CON-SE-ZA-1580 FF, SDR-2-CON-SE-ZA-1600 FF, SDR-2-CON-SE-ZA-1610 FF, SDR-2-CON-SE-ZA-1670 FF, SDR-2-CON-SE-ZA-1680 FF, SDR-2-CON-SE-ZA-1700 FF, SDR-2-CON-SE-ZA-1710 FF, SDR-2-CON-SE-ZA-1770 FF, SDR-2-CON-SE-ZA-1780 FF, SDR-2-CON-SE-ZA-1800 FF, SDR-2-CON-SE-ZA-1810 FF, SDR-2-CON-SE-ZA-1870 FF, SDR-2-CON-SE-ZA-1880 FF, SDR-2-CON-SE-ZA-1900 FF, SDR-2-CON-SE-ZA-1910 FF, SDR-2-CON-SE-ZA-1970 FF, SDR-2-CON-SE-ZA-2000 FF, SDR-2-CON-SE-ZA-2110 FF, SDR-2-CON-SE-ZA-2180 FF, SDR-2-CON-SE-ZA-2210 FF, SDR-2-CON-SE-ZA-2310 FF, SDR-2-CON-SE-ZA-2410 FF, SDR-2-CON-TS-ZA-1000 FF, SDR-2-CON-TS-ZA-3100 FF, SDR-2-CON-TS-ZA-3130 FF, SDR-2-CON-TS-ZA-3110 FF, SDR-2-CON-TS-ZA-3120 FF, SDR-2-CON-TS-ZA-3140 FF, SDR-2-CON-TS-ZA-2300 FF, SDR-2-CON-TS-ZA-2380 FF, SDR-2-CON-TS-ZA-2310 FF, SDR-2-CON-TS-ZA-2400 FF, SDR-2-CON-TS-ZA-2900 FF, SDR-2-CON-TS-ZA-3000 FF, SDR-2-CON-TS-ZA-2500 FF, SDR-2-CON-PW-ZA-1000 FF, SDR-2-CON-PW-ZA-2200 FF, SDR-2-CON-PW-ZA-1010 FF, SDR-2-CON-PW-ZA-2260 FF, SDR-2-CON-PW-ZA-2340 FF, SDR-2-CON-PW-ZA-2270 FF, SDR-2-CON-PW-ZA-2330 FF, SDR-2-CON-PW-ZA-2350 FF, SDR-2-CON-PW-ZG-1500 FF, SDR-2-CON-PW-ZG-1010 FF, SDR-2-CON-PW-ZA-2940 FF, SDR-2-CON-PW-ZA-2920 FF, SDR-2-CON-PW-ZA-3040 FF, SDR-2-CON-PW-ZA-3140 FF, SDR-2-CON-PW-ZA-2640 FF, SDR-2-CON-PW-ZA-2570 FF, SDR-2-CON-SL-ZA-1000 FF, SDR-2-CON-SL-ZA-1010 FF, SDR-2-CON-SL-ZA-2870 FF, SDR-2-CON-SL-ZA-2880 FF, SDR-2-CON-SL-ZA-1300 FF, SDR-2-CON-SL-ZA-1310 FF, SDR-2-CON-SL-ZA-2950 FF, SDR-2-CON-SL-ZA-2960 FF, SDR-2-CON-SL-ZA-2990 FF, SDR-2-CON-SL-ZA-3000 FF, SDR-2-CON-SL-ZA-3030 FF, SDR-2-CON-SL-ZA-3040 FF, SDR-2-CON-SL-ZA-3070 FF, SDR-2-CON-SL-ZA-3080 FF, SDR-2-CON-SL-ZA-3110 FF, SDR-2-CON-SL-ZA-3120 FF, SDR-2-CON-SL-ZA-3150 FF, SDR-2-CON-SL-ZA-3160 FF, SDR-2-CON-SL-ZA-3190 FF, SDR-2-CON-SL-ZA-3200 FF, SDR-2-CON-SL-ZA-2910 FF, SDR-2-CON-SL-ZA-2920 FF, SDR-2-CON-MV-ZA-1000 FF, SDR-2-CON-MV-ZA-1070 FF, SDR-2-CON-MV-ZA-1150 FF, SDR-2-CON-MV-ZA-1160 FF, SDR-2-CON-MV-ZA-1170 FF, SDR-2-CON-MV-ZA-1200 FF, SDR-2-CON-MV-ZA-1210 FF, SDR-2-CON-MV-ZA-1240 FF, SDR-2-CON-MV-ZA-1250 FF, SDR-2-CON-TE-ZA-1030 FF, SDR-2-CON-TE-ZA-1850 FF, SDR-2-CON-TE-ZA-3210 FF, SDR-2-CON-TE-ZA-3220 FF, SDR-2-CON-TE-ZA-3230 FF, SDR-2-CON-TE-ZA-3240 FF, SDR-2-CON-TE-ZA-3290 FF, SDR-2-CON-TE-ZA-3250 FF, SDR-2-CON-TE-ZA-3300 FF, SDR-2-CON-TE-ZA-3330 FF, SDR-2-CON-TE-ZA-3390 FF, SDR-2-CON-TE-ZA-3420 FF, SDR-2-CON-TE-ZA-3480 FF, SDR-2-CON-TE-ZA-3490 FF, SDR-2-CON-TE-ZA-3510 FF, SDR-2-CON-TE-ZA-3560 FF, SDR-2-CON-TE-ZA-3570 FF, SDR-2-CON-TE-ZA-3580 FF, SDR-2-CON-TE-ZA-3600 FF, SDR-2-CON-TE-ZA-3650 FF, SDR-2-CON-TE-ZA-3660 FF, SDR-2-CON-TE-ZA-3670 FF, SDR-2-CON-TE-ZA-3750 FF, SDR-2-CON-TE-ZA-3760 FF, SDR-2-CON-TE-ZA-3840 FF, SDR-2-CON-TE-ZA-3850 FF, SDR-2-CON-TE-ZA-3930 FF, SDR-2-CON-TE-ZA-4020 FF, SDR-2-CON-TE-ZA-4110 FF, SDR-2-CON-TE-ZA-4120 FF, SDR-2-CON-TE-ZA-4140 FF, SDR-2-CON-TE-ZA-4190 FF, SDR-2-CON-TE-ZA-4150 FF, SDR-2-CON-SL-ZA-3230 FF, SDR-2-CON-SL-ZA-3240 FF, SDR-2-CON-SL-ZA-3270 FF, SDR-2-CON-SL-ZA-3280 FF, SDR-2-CON-SL-ZA-3310 FF, SDR-2-CON-SL-ZA-3320 FF, SDR-2-CON-SL-ZA-3350 FF, SDR-2-CON-SL-ZA-3360 FF, SDR-2-CON-SL-ZA-3390 FF, SDR-2-CON-SL-ZA-3400 FF, SDR-2-CON-SL-ZA-3420 FF, SDR-2-CON-SL-ZA-3410 FF, SDR-2-CON-MV-ZA-1280 FF, SDR-2-CON-MV-ZA-1290 FF, SDR-2-CON-MV-ZA-1310 FF, SDR-2-CON-MV-ZA-1320 FF, SDR-2-CON-MV-ZA-1330 FF, SDR-2-CON-MV-ZA-1350 FF, SDR-2-CON-TE-ZA-4200 FF, SDR-2-CON-TE-ZA-4210 FF, SDR-2-CON-TE-ZA-4230 FF, SDR-2-CON-TE-ZA-4280 FF, SDR-2-CON-TE-ZA-4240 FF, SDR-2-CON-TE-ZA-4250 FF, SDR-2-CON-TE-ZA-4300 FF, SDR-2-CON-TE-ZA-4310 FF, SDR-2-CON-TE-ZA-4360 FF, SDR-2-CON-TE-ZA-4320 FF, SDR-2-CON-TE-ZA-4370 FF, SDR-2-CON-TE-ZA-4330 FF, SDR-2-CON-TE-ZA-4380 FF, SDR-2-CON-TE-ZA-4390 FF, SDR-2-CON-TE-ZA-4400 FF, SDR-2-CON-TE-ZA-4450 FF, SDR-2-CON-TE-ZA-4410 FF, SDR-2-CON-TE-ZA-4460 FF, SDR-2-CON-TE-ZA-4420 FF, SDR-2-CON-TE-ZA-4470 FF, SDR-2-CON-TE-ZA-4480 FF, SDR-2-CON-TE-ZA-4490 FF, SDR-2-CON-TE-ZA-4540 FF, SDR-2-CON-TE-ZA-4500 FF, SDR-2-CON-TE-ZA-4550 FF, SDR-2-CON-TE-ZA-4510 FF, SDR-2-CON-CC-ZA-1000 FF, SDR-2-CON-CC-ZA-1030 FF, SDR-2-CON-CC-ZA-1080 FF, SDR-2-CON-CC-ZA-1090 FF, SDR-2-CON-CC-ZA-1240 FF, SDR-2-CON-CC-ZA-1250 FF, SDR-2-CON-CC-ZA-1380 FF, SDR-2-CON-CC-ZA-1390 FF, SDR-2-CON-CC-ZA-1670 FF, SDR-2-CON-CC-ZA-1700 FF, SDR-2-CON-CC-ZA-1750 FF, SDR-2-CON-CC-ZA-1790 FF, SDR-2-CON-CC-ZA-1830 FF, SDR-2-CON-ST-ZA-4020 FF, SDR-2-CON-SE-ZA-1430 FF, SDR-2-CON-SE-ZA-1440 FF, SDR-2-CON-SE-ZA-1530 FF, SDR-2-CON-SE-ZA-1540 FF, SDR-2-CON-SE-ZA-1630 FF, SDR-2-CON-SE-ZA-1730 FF, SDR-2-CON-SE-ZA-1740 FF, SDR-2-CON-SE-ZA-1830 FF, SDR-2-CON-SE-ZA-1840 FF, SDR-2-CON-SE-ZA-1930 FF, SDR-2-CON-SE-ZA-1940 FF, SDR-2-CON-SE-ZA-1980 FF, SDR-2-CON-SE-ZA-2030 FF, SDR-2-CON-SE-ZA-2010 FF, SDR-2-CON-SE-ZA-2040 FF, SDR-2-CON-TS-ZA-1900 FF, SDR-2-CON-TS-ZA-1010 FF, SDR-2-CON-TS-ZA-1080 FF, SDR-2-CON-TS-ZA-1910 FF, SDR-2-CON-TS-ZA-1040 FF, SDR-2-CON-TS-ZA-1020 FF, SDR-2-CON-TS-ZA-1050 FF, SDR-2-CON-TS-ZA-1060 FF, SDR-2-CON-TS-ZA-1070 FF, SDR-2-CON-TS-ZA-2200 FF, SDR-2-CON-TS-ZA-2280 FF, SDR-2-CON-TS-ZA-2210 FF, SDR-2-CON-TS-ZA-2270 FF, SDR-2-CON-TS-ZA-2290 FF, SDR-2-CON-TS-ZA-2230 FF, SDR-2-CON-TS-ZA-2240 FF, SDR-2-CON-TS-ZA-2250 FF, SDR-2-CON-TS-ZA-2260 FF, SDR-2-CON-TS-ZA-1180 FF, SDR-2-CON-TS-ZA-1920 FF, SDR-2-CON-TS-ZA-1190 FF, SDR-2-CON-TS-ZA-1260 FF, SDR-2-CON-TS-ZA-1930 FF, SDR-2-CON-TS-ZA-2010 FF, SDR-2-CON-TS-ZA-2000 FF, SDR-2-CON-TS-ZA-2020 FF, SDR-2-CON-TS-ZA-2030 FF, SDR-2-CON-TS-ZA-2040 FF, SDR-2-CON-TS-ZA-1270 FF, SDR-2-CON-TS-ZA-1940 FF, SDR-2-CON-TS-ZA-1280 FF, SDR-2-CON-TS-ZA-1350 FF, SDR-2-CON-TS-ZA-1950 FF, SDR-2-CON-TS-ZA-2060 FF, SDR-2-CON-TS-ZA-2050 FF, SDR-2-CON-TS-ZA-2070 FF, SDR-2-CON-TS-ZA-2080 FF, SDR-2-CON-TS-ZA-2090 FF, SDR-2-CON-TS-ZA-2660 FF, SDR-2-CON-TS-ZA-2650 FF, SDR-2-CON-TS-ZA-2670 FF, SDR-2-CON-TS-ZA-2680 FF, SDR-2-CON-TS-ZA-2690 FF, SDR-2-CON-TS-ZA-2700 FF, SDR-2-CON-TS-ZA-2730 FF, SDR-2-CON-TS-ZA-2710 FF, SDR-2-CON-TS-ZA-2720 FF, SDR-2-CON-TS-ZA-2740 FF, SDR-2-CON-TS-ZA-2760 FF, SDR-2-CON-TS-ZA-2750 FF, SDR-2-CON-TS-ZA-2770 FF, SDR-2-CON-TS-ZA-2780 FF, SDR-2-CON-TS-ZA-2800 FF, SDR-2-CON-TS-ZA-2830 FF, SDR-2-CON-TS-ZA-2810 FF, SDR-2-CON-TS-ZA-2820 FF, SDR-2-CON-TS-ZA-2840 FF, SDR-2-CON-TS-ZA-2860 FF, SDR-2-CON-TS-ZA-2850 FF, SDR-2-CON-TS-ZA-2870 FF, SDR-2-CON-TS-ZA-2880 FF, SDR-2-CON-TS-ZA-2890 FF, SDR-2-CON-TS-ZA-1630 FF, SDR-2-CON-TS-ZA-1960 FF, SDR-2-CON-TS-ZA-1640 FF, SDR-2-CON-TS-ZA-1710 FF, SDR-2-CON-TS-ZA-1970 FF, SDR-2-CON-TS-ZA-2110 FF, SDR-2-CON-TS-ZA-2100 FF, SDR-2-CON-TS-ZA-2120 FF, SDR-2-CON-TS-ZA-2130 FF, SDR-2-CON-TS-ZA-2140 FF, SDR-2-CON-TS-ZA-1720 FF, SDR-2-CON-TS-ZA-1980 FF, SDR-2-CON-TS-ZA-1730 FF, SDR-2-CON-TS-ZA-1800 FF, SDR-2-CON-TS-ZA-1990 FF, SDR-2-CON-TS-ZA-2160 FF, SDR-2-CON-TS-ZA-2150 FF, SDR-2-CON-TS-ZA-2170 FF, SDR-2-CON-TS-ZA-2180 FF, SDR-2-CON-TS-ZA-2190 FF, SDR-2-CON-TS-ZA-3160 FF, SDR-2-CON-TS-ZA-3150 FF, SDR-2-CON-TS-ZA-3170 FF, SDR-2-CON-TS-ZA-3180 FF, SDR-2-CON-TS-ZA-3190 FF, SDR-2-CON-TS-ZA-2370 FF, SDR-2-CON-TS-ZA-2390 FF, SDR-2-CON-TS-ZA-2330 FF, SDR-2-CON-TS-ZA-2320 FF, SDR-2-CON-TS-ZA-2340 FF, SDR-2-CON-TS-ZA-2350 FF, SDR-2-CON-TS-ZA-2360 FF, SDR-2-CON-TS-ZA-2430 FF, SDR-2-CON-TS-ZA-2410 FF, SDR-2-CON-TS-ZA-2420 FF, SDR-2-CON-TS-ZA-2440 FF, SDR-2-CON-TS-ZA-2460 FF, SDR-2-CON-TS-ZA-2450 FF, SDR-2-CON-TS-ZA-2470 FF, SDR-2-CON-TS-ZA-2480 FF, SDR-2-CON-TS-ZA-2490 FF, SDR-2-CON-TS-ZA-2930 FF, SDR-2-CON-TS-ZA-2910 FF, SDR-2-CON-TS-ZA-2920 FF, SDR-2-CON-TS-ZA-2940 FF, SDR-2-CON-TS-ZA-2960 FF, SDR-2-CON-TS-ZA-2950 FF, SDR-2-CON-TS-ZA-2970 FF, SDR-2-CON-TS-ZA-2980 FF, SDR-2-CON-TS-ZA-2990 FF, SDR-2-CON-TS-ZA-3030 FF, SDR-2-CON-TS-ZA-3010 FF, SDR-2-CON-TS-ZA-3020 FF, SDR-2-CON-TS-ZA-3040 FF, SDR-2-CON-TS-ZA-3060 FF, SDR-2-CON-TS-ZA-3050 FF, SDR-2-CON-TS-ZA-2530 FF, SDR-2-CON-TS-ZA-2510 FF, SDR-2-CON-TS-ZA-2520 FF, SDR-2-CON-TS-ZA-2560 FF, SDR-2-CON-TS-ZA-2550 FF, SDR-2-CON-TS-ZA-2570 FF, SDR-2-CON-TS-ZA-2580 FF, SDR-2-CON-TS-ZA-2590 FF, SDR-2-CON-PW-ZA-1080 FF, SDR-2-CON-PW-ZA-2210 FF, SDR-2-CON-PW-ZA-1040 FF, SDR-2-CON-PW-ZA-1020 FF, SDR-2-CON-PW-ZA-1050 FF, SDR-2-CON-PW-ZA-1030 FF, SDR-2-CON-PW-ZA-1070 FF, SDR-2-CON-PW-ZA-2300 FF, SDR-2-CON-PW-ZA-2280 FF, SDR-2-CON-PW-ZA-2310 FF, SDR-2-CON-PW-ZA-2290 FF, SDR-2-CON-PW-ZA-1200 FF, SDR-2-CON-PW-ZA-2220 FF, SDR-2-CON-PW-ZA-1210 FF, SDR-2-CON-PW-ZA-1280 FF, SDR-2-CON-PW-ZA-2230 FF, SDR-2-CON-PW-ZA-2680 FF, SDR-2-CON-PW-ZA-2660 FF, SDR-2-CON-PW-ZA-2690 FF, SDR-2-CON-PW-ZA-2670 FF, SDR-2-CON-PW-ZA-2700 FF, SDR-2-CON-PW-ZA-2710 FF, SDR-2-CON-PW-ZA-2740 FF, SDR-2-CON-PW-ZA-2720 FF, SDR-2-CON-PW-ZA-2730 FF, SDR-2-CON-PW-ZA-2750 FF, SDR-2-CON-PW-ZA-2780 FF, SDR-2-CON-PW-ZA-2760 FF, SDR-2-CON-PW-ZA-2790 FF, SDR-2-CON-PW-ZA-2770 FF, SDR-2-CON-PW-ZA-2800 FF, SDR-2-CON-PW-ZA-1400 FF, SDR-2-CON-PW-ZA-2240 FF, SDR-2-CON-PW-ZA-1410 FF, SDR-2-CON-PW-ZA-1480 FF, SDR-2-CON-PW-ZA-2250 FF, SDR-2-CON-PW-ZA-3230 FF, SDR-2-CON-PW-ZA-3210 FF, SDR-2-CON-PW-ZA-3240 FF, SDR-2-CON-PW-ZA-3220 FF, SDR-2-CON-PW-ZA-3260 FF, SDR-2-CON-PW-ZA-3290 FF, SDR-2-CON-PW-ZA-3270 FF, SDR-2-CON-PW-ZA-3280 FF, SDR-2-CON-PW-ZA-3300 FF, SDR-2-CON-PW-ZA-3330 FF, SDR-2-CON-PW-ZA-3310 FF, SDR-2-CON-PW-ZA-3340 FF, SDR-2-CON-PW-ZA-3320 FF, SDR-2-CON-PW-ZA-3360 FF, SDR-2-CON-PW-ZA-3390 FF, SDR-2-CON-PW-ZA-3370 FF, SDR-2-CON-PW-ZA-3380 FF, SDR-2-CON-PW-ZA-3400 FF, SDR-2-CON-PW-ZA-3460 FF, SDR-2-CON-PW-ZA-3490 FF, SDR-2-CON-PW-ZA-3470 FF, SDR-2-CON-PW-ZA-3480 FF, SDR-2-CON-PW-ZA-3500 FF, SDR-2-CON-PW-ZA-3530 FF, SDR-2-CON-PW-ZA-3510 FF, SDR-2-CON-PW-ZA-3540 FF, SDR-2-CON-PW-ZA-3520 FF, SDR-2-CON-PW-ZA-3550 FF, SDR-2-CON-PW-ZA-3560 FF, SDR-2-CON-PW-ZA-3590 FF, SDR-2-CON-PW-ZA-3570 FF, SDR-2-CON-PW-ZA-3580 FF, SDR-2-CON-PW-ZA-3600 FF, SDR-2-CON-PW-ZA-2810 FF, SDR-2-CON-PW-ZA-2840 FF, SDR-2-CON-PW-ZA-2820 FF, SDR-2-CON-PW-ZA-2830 FF, SDR-2-CON-PW-ZA-2850 FF, SDR-2-CON-PW-ZA-2880 FF, SDR-2-CON-PW-ZA-2860 FF, SDR-2-CON-PW-ZA-2890 FF, SDR-2-CON-PW-ZA-2870 FF, SDR-2-CON-PW-ZA-2900 FF, SDR-2-CON-PW-ZA-2360 FF, SDR-2-CON-PW-ZA-2440 FF, SDR-2-CON-PW-ZA-2370 FF, SDR-2-CON-PW-ZA-2430 FF, SDR-2-CON-PW-ZA-2450 FF, SDR-2-CON-PW-ZA-2400 FF, SDR-2-CON-PW-ZA-2380 FF, SDR-2-CON-PW-ZA-2410 FF, SDR-2-CON-PW-ZA-2390 FF, SDR-2-CON-PW-ZA-2420 FF, SDR-2-CON-PW-ZA-2460 FF, SDR-2-CON-PW-ZA-2540 FF, SDR-2-CON-PW-ZA-2470 FF, SDR-2-CON-PW-ZA-2530 FF, SDR-2-CON-PW-ZA-2500 FF, SDR-2-CON-PW-ZA-2480 FF, SDR-2-CON-PW-ZA-2510 FF, SDR-2-CON-PW-ZA-2490 FF, SDR-2-CON-PW-ZA-2520 FF, SDR-2-CON-PW-ZG-1080 FF, SDR-2-CON-PW-ZG-1510 FF, SDR-2-CON-PW-ZA-3680 FF, SDR-2-CON-PW-ZA-3660 FF, SDR-2-CON-PW-ZA-3690 FF, SDR-2-CON-PW-ZA-3670 FF, SDR-2-CON-PW-ZA-3700 FF, SDR-2-CON-PW-ZA-2930 FF, SDR-2-CON-PW-ZA-2950 FF, SDR-2-CON-PW-ZA-2980 FF, SDR-2-CON-PW-ZA-2960 FF, SDR-2-CON-PW-ZA-2990 FF, SDR-2-CON-PW-ZA-2970 FF, SDR-2-CON-PW-ZA-3030 FF, SDR-2-CON-PW-ZA-3050 FF, SDR-2-CON-PW-ZA-3080 FF, SDR-2-CON-PW-ZA-3060 FF, SDR-2-CON-PW-ZA-3090 FF, SDR-2-CON-PW-ZA-3070 FF, SDR-2-CON-PW-ZA-3100 FF, SDR-2-CON-PW-ZA-3130 FF, SDR-2-CON-PW-ZA-3150 FF, SDR-2-CON-PW-ZA-3180 FF, SDR-2-CON-PW-ZA-3160 FF, SDR-2-CON-PW-ZA-3190 FF, SDR-2-CON-PW-ZA-3170 FF, SDR-2-CON-PW-ZA-3200 FF, SDR-2-CON-PW-ZA-2630 FF, SDR-2-CON-PW-ZA-2650 FF, SDR-2-CON-PW-ZA-2600 FF, SDR-2-CON-PW-ZA-2580 FF, SDR-2-CON-PW-ZA-2610 FF, SDR-2-CON-PW-ZA-2590 FF, SDR-2-CON-PW-ZA-2620 FF, SDR-2-CON-SL-ZA-1110 FF, SDR-2-CON-SL-ZA-1100 FF, SDR-2-CON-SL-ZA-2900 FF, SDR-2-CON-SL-ZA-2890 FF, SDR-2-CON-SL-ZA-1410 FF, SDR-2-CON-SL-ZA-1400 FF, SDR-2-CON-SL-ZA-2980 FF, SDR-2-CON-SL-ZA-2970 FF, SDR-2-CON-SL-ZA-3020 FF, SDR-2-CON-SL-ZA-3010 FF, SDR-2-CON-SL-ZA-3060 FF, SDR-2-CON-SL-ZA-3050 FF, SDR-2-CON-SL-ZA-3100 FF, SDR-2-CON-SL-ZA-3090 FF, SDR-2-CON-SL-ZA-3140 FF, SDR-2-CON-SL-ZA-3130 FF, SDR-2-CON-SL-ZA-3180 FF, SDR-2-CON-SL-ZA-3170 FF, SDR-2-CON-SL-ZA-3220 FF, SDR-2-CON-SL-ZA-3210 FF, SDR-2-CON-SL-ZA-2940 FF, SDR-2-CON-SL-ZA-2930 FF, SDR-2-CON-SL-ZA-2650 FF, SDR-2-CON-SL-ZA-2760 FF, SDR-2-CON-SL-ZA-2770 FF, SDR-2-CON-SL-ZA-2780 FF, SDR-2-CON-SL-ZA-2660 FF, SDR-2-CON-SL-ZA-2790 FF, SDR-2-CON-SL-ZA-2800 FF, SDR-2-CON-SL-ZA-2670 FF, SDR-2-CON-SL-ZA-2810 FF, SDR-2-CON-SL-ZA-2820 FF, SDR-2-CON-SL-ZA-2680 FF, SDR-2-CON-SL-ZA-2830 FF, SDR-2-CON-SL-ZA-2840 FF, SDR-2-CON-SL-ZA-2690 FF, SDR-2-CON-SL-ZA-2850 FF, SDR-2-CON-SL-ZA-2860 FF, SDR-2-CON-MV-ZA-1100 FF, SDR-2-CON-MV-ZA-1190 FF, SDR-2-CON-MV-ZA-1180 FF, SDR-2-CON-MV-ZA-1230 FF, SDR-2-CON-MV-ZA-1220 FF, SDR-2-CON-MV-ZA-1270 FF, SDR-2-CON-MV-ZA-1260 FF, SDR-2-CON-TE-ZA-1040 FF, SDR-2-CON-TE-ZA-1050 FF, SDR-2-CON-TE-ZA-1060 FF, SDR-2-CON-TE-ZA-3280 FF, SDR-2-CON-TE-ZA-3260 FF, SDR-2-CON-TE-ZA-3270 FF, SDR-2-CON-TE-ZA-3310 FF, SDR-2-CON-TE-ZA-3320 FF, SDR-2-CON-TE-ZA-3370 FF, SDR-2-CON-TE-ZA-3380 FF, SDR-2-CON-TE-ZA-3340 FF, SDR-2-CON-TE-ZA-3350 FF, SDR-2-CON-TE-ZA-3360 FF, SDR-2-CON-TE-ZA-3400 FF, SDR-2-CON-TE-ZA-3410 FF, SDR-2-CON-TE-ZA-3460 FF, SDR-2-CON-TE-ZA-3470 FF, SDR-2-CON-TE-ZA-3430 FF, SDR-2-CON-TE-ZA-3440 FF, SDR-2-CON-TE-ZA-3450 FF, SDR-2-CON-TE-ZA-3500 FF, SDR-2-CON-TE-ZA-3550 FF, SDR-2-CON-TE-ZA-3520 FF, SDR-2-CON-TE-ZA-3530 FF, SDR-2-CON-TE-ZA-3540 FF, SDR-2-CON-TE-ZA-3590 FF, SDR-2-CON-TE-ZA-3640 FF, SDR-2-CON-TE-ZA-3610 FF, SDR-2-CON-TE-ZA-3620 FF, SDR-2-CON-TE-ZA-3630 FF, SDR-2-CON-TE-ZA-3680 FF, SDR-2-CON-TE-ZA-3730 FF, SDR-2-CON-TE-ZA-3690 FF, SDR-2-CON-TE-ZA-3740 FF, SDR-2-CON-TE-ZA-3700 FF, SDR-2-CON-TE-ZA-3710 FF, SDR-2-CON-TE-ZA-3720 FF, SDR-2-CON-TE-ZA-3770 FF, SDR-2-CON-TE-ZA-3820 FF, SDR-2-CON-TE-ZA-3780 FF, SDR-2-CON-TE-ZA-3830 FF, SDR-2-CON-TE-ZA-3790 FF, SDR-2-CON-TE-ZA-3800 FF, SDR-2-CON-TE-ZA-3810 FF, SDR-2-CON-TE-ZA-3860 FF, SDR-2-CON-TE-ZA-3910 FF, SDR-2-CON-TE-ZA-3870 FF, SDR-2-CON-TE-ZA-3920 FF, SDR-2-CON-TE-ZA-3880 FF, SDR-2-CON-TE-ZA-3890 FF, SDR-2-CON-TE-ZA-3900 FF, SDR-2-CON-TE-ZA-3940 FF, SDR-2-CON-TE-ZA-3950 FF, SDR-2-CON-TE-ZA-4000 FF, SDR-2-CON-TE-ZA-3960 FF, SDR-2-CON-TE-ZA-4010 FF, SDR-2-CON-TE-ZA-3970 FF, SDR-2-CON-TE-ZA-3980 FF, SDR-2-CON-TE-ZA-3990 FF, SDR-2-CON-TE-ZA-4030 FF, SDR-2-CON-TE-ZA-4040 FF, SDR-2-CON-TE-ZA-4090 FF, SDR-2-CON-TE-ZA-4050 FF, SDR-2-CON-TE-ZA-4100 FF, SDR-2-CON-TE-ZA-4060 FF, SDR-2-CON-TE-ZA-4070 FF, SDR-2-CON-TE-ZA-4080 FF, SDR-2-CON-TE-ZA-4130 FF, SDR-2-CON-TE-ZA-4180 FF, SDR-2-CON-TE-ZA-4160 FF, SDR-2-CON-TE-ZA-4170 FF, SDR-2-CON-SL-ZA-3260 FF, SDR-2-CON-SL-ZA-3250 FF, SDR-2-CON-SL-ZA-3300 FF, SDR-2-CON-SL-ZA-3290 FF, SDR-2-CON-SL-ZA-3340 FF, SDR-2-CON-SL-ZA-3330 FF, SDR-2-CON-SL-ZA-3380 FF, SDR-2-CON-SL-ZA-3370 FF, SDR-2-CON-SL-ZA-3430 FF, SDR-2-CON-SL-ZA-3440 FF, SDR-2-CON-SL-ZA-3450 FF, SDR-2-CON-SL-ZA-3460 FF, SDR-2-CON-SL-ZA-3470 FF, SDR-2-CON-SL-ZA-3480 FF, SDR-2-CON-SL-ZA-3490 FF, SDR-2-CON-SL-ZA-3500 FF, SDR-2-CON-SL-ZA-3510 FF, SDR-2-CON-SL-ZA-3520 FF, SDR-2-CON-SL-ZA-3530 FF, SDR-2-CON-SL-ZA-3540 FF, SDR-2-CON-SL-ZA-3550 FF, SDR-2-CON-SL-ZA-3560 FF, SDR-2-CON-SL-ZA-3570 FF, SDR-2-CON-SL-ZA-3580 FF, SDR-2-CON-MV-ZA-1300 FF, SDR-2-CON-MV-ZA-1340 FF, SDR-2-CON-TE-ZA-4220 FF, SDR-2-CON-TE-ZA-4270 FF, SDR-2-CON-TE-ZA-4260 FF, SDR-2-CON-TE-ZA-4340 FF, SDR-2-CON-TE-ZA-4350 FF, SDR-2-CON-TE-ZA-4430 FF, SDR-2-CON-TE-ZA-4440 FF, SDR-2-CON-TE-ZA-4520 FF, SDR-2-CON-TE-ZA-4530 FF, SDR-2-CON-CC-ZA-1050 FF, SDR-2-CON-CC-ZA-1060 FF, SDR-2-CON-CC-ZA-1100 FF, SDR-2-CON-CC-ZA-1110 FF, SDR-2-CON-CC-ZA-1260 FF, SDR-2-CON-CC-ZA-1270 FF, SDR-2-CON-CC-ZA-1400 FF, SDR-2-CON-CC-ZA-1410 FF, SDR-2-CON-CC-ZA-1500 FF, SDR-2-CON-CC-ZA-1510 FF, SDR-2-CON-CC-ZA-1520 FF, SDR-2-CON-CC-ZA-1530 FF, SDR-2-CON-CC-ZA-1540 FF, SDR-2-CON-CC-ZA-1550 FF, SDR-2-CON-CC-ZA-1560 FF, SDR-2-CON-CC-ZA-1570 FF, SDR-2-CON-CC-ZA-1580 FF, SDR-2-CON-CC-ZA-1590 FF, SDR-2-CON-CC-ZA-1610 FF, SDR-2-CON-CC-ZA-1620 FF, SDR-2-CON-CC-ZA-1630 FF, SDR-2-CON-CC-ZA-1640 FF, SDR-2-CON-CC-ZA-1650 FF, SDR-2-CON-CC-ZA-1660 FF, SDR-2-CON-CC-ZA-1720 FF, SDR-2-CON-CC-ZA-1730 FF, SDR-2-CON-CC-ZA-1760 FF, SDR-2-CON-CC-ZA-1770 FF, SDR-2-CON-CC-ZA-1780 FF, SDR-2-CON-CC-ZA-1800 FF, SDR-2-CON-CC-ZA-1810 FF, SDR-2-CON-CC-ZA-1820 FF, SDR-2-CON-CC-ZA-1840 FF, SDR-2-CON-CC-ZA-1850 FF, SDR-2-CON-CC-ZA-1860 FF, SDR-2-CON-CC-ZG-1500 FF, SDR-2-CON-CC-ZG-1540 FF, SDR-2-CON-CC-ZG-1550 FF, SDR-2-CON-CC-ZG-1510 FF, SDR-2-CON-CC-ZG-1560 FF, SDR-2-CON-CC-ZG-1570 FF, SDR-2-CON-CC-ZG-1580 FF, SDR-2-CON-CC-ZG-1520 FF, SDR-2-CON-CC-ZG-1590 FF, SDR-2-CON-CC-ZG-1530 FF, SDR-2-CON-CC-ZG-1600 FF, SDR-2-CON-CC-ZG-1610 FF, SDR-2-CON-CC-ZG-1620 FF, SDR-2-CON-CC-ZG-1630 FF, SDR-2-CON-CC-ZG-1640 FF, SDR-2-CON-CC-ZG-1650 FF, SDR-2-CON-CC-ZG-1660 FF, SDR-2-CON-SE-ZA-2690 FF, SDR-2-MILS-1050 FF, SDR-2-CON-ST-ZA-5970 FF, SDR-2-CON-ST-ZA-5220 FF, SDR-2-CON-SE-ZA-1000, SDR-2-CON-SE-ZA-1420, SDR-2-CON-SE-ZA-1030, SDR-2-CON-SE-ZA-1450, SDR-2-CON-SE-ZA-1460, SDR-2-CON-SE-ZA-1520 |
| 8 | **install** | 2027-05-08 → 2027-05-22 (+14d) | 2027-05-27 → 2027-06-05 (+9d) |  |  |  |
| SDR-2-CON-IR-ZA-1010 | Installation of HDPE Pipe | 2027-05-08 → 2027-05-22 (+14d) | 2027-05-27 → 2027-06-05 (+9d) |  | 19d → 12d |  |
| 9 | **Finishing** | 2027-05-29 → 2027-06-06 (+8d) | 2027-06-08 → 2027-06-16 (+8d) |  |  |  |
| SDR-2-CON-IR-ZA-1020 | Finishing Works for irrigation | 2027-05-29 → 2027-06-06 (+8d) | 2027-06-08 → 2027-06-16 (+8d) |  | 19d → 12d |  |
| 10 | **Repairs** | 2027-06-09 → 2027-06-17 (+8d) | 2027-06-13 → 2027-06-21 (+8d) |  |  |  |
| SDR-2-CON-IR-ZA-1030 | Repair for irrigation Works | 2027-06-09 → 2027-06-17 (+8d) | 2027-06-13 → 2027-06-21 (+8d) |  | 19d → 12d |  |
| 2 | **IRRIGATION WORKS IN ( PH2-COL-MC20 )** | 2027-05-06 → 2027-05-08 (+2d) | 2027-06-22 → 2027-06-23 (+1d) |  |  |  |

| ID | Task | Start | Finish | Duration | Complete | Total float | Predecessors |
| --- | --- | --- | --- | --- | --- | --- | --- |
| 7 | **Pre install** | 2027-05-06 → 2027-05-08 (+2d) | 2027-06-03 → 2027-06-05 (+2d) |  |  |  |  |
| SDR-2-CON-IR-ZA-2120 | Pre Install for irrigation Works | 2027-05-06 → 2027-05-08 (+2d) | 2027-06-03 → 2027-06-05 (+2d) |  |  | 10d → 9d |  |
| 8 | **install** | 2027-05-24 → 2027-05-25 (+1d) | 2027-06-06 → 2027-06-07 (+1d) |  |  |  |  |
| SDR-2-CON-IR-ZA-2130 | Installation of HDPE Pipe | 2027-05-24 → 2027-05-25 (+1d) | 2027-06-06 → 2027-06-07 (+1d) |  |  | 10d → 9d |  |
| 9 | **Finishing** | 2027-06-07 → 2027-06-08 (+1d) | 2027-06-16 → 2027-06-17 (+1d) |  |  |  |  |
| SDR-2-CON-IR-ZA-2140 | Finishing Works for irrigation | 2027-06-07 → 2027-06-08 (+1d) | 2027-06-16 → 2027-06-17 (+1d) |  |  | 11d → 10d |  |
| 10 | **Repairs** | 2027-06-17 → 2027-06-19 (+2d) | 2027-06-22 → 2027-06-23 (+1d) |  |  |  |  |
| SDR-2-CON-IR-ZA-2150 | Repair for irrigation Works | 2027-06-17 → 2027-06-19 (+2d) | 2027-06-22 → 2027-06-23 (+1d) |  |  | 11d → 10d |  |
| 11 | **IRRIGATION WORKS IN ( PH2-A-MCA0 )** | 2027-05-06 → 2027-05-08 (+2d) | 2027-06-30 → 2027-06-23 (-7d) |  |  |  |  |
| 7 | **Pre install** | 2027-05-06 → 2027-05-08 (+2d) | 2027-06-02 → 2027-05-26 (-7d) |  |  |  |  |
| SDR-2-CON-IR-ZA-2160 | Pre Install for irrigation Works | 2027-05-06 → 2027-05-08 (+2d) | 2027-06-02 → 2027-05-26 (-7d) | 19d → 12d |  | 0d → 6d |  |
| 8 | **install** | 2027-06-03 → 2027-05-27 (-7d) | 2027-06-17 → 2027-06-10 (-7d) |  |  |  |  |
| SDR-2-CON-IR-ZA-2170 | Installation of HDPE Pipe | 2027-06-03 → 2027-05-27 (-7d) | 2027-06-17 → 2027-06-10 (-7d) |  |  | 0d → 6d |  |
| 9 | **Finishing** | 2027-06-19 → 2027-06-12 (-7d) | 2027-06-28 → 2027-06-21 (-7d) |  |  |  |  |
| SDR-2-CON-IR-ZA-2180 | Finishing Works for irrigation | 2027-06-19 → 2027-06-12 (-7d) | 2027-06-28 → 2027-06-21 (-7d) |  |  | 0d → 6d |  |
| 10 | **Repairs** | 2027-06-29 → 2027-06-22 (-7d) | 2027-06-30 → 2027-06-23 (-7d) |  |  |  |  |
| SDR-2-CON-IR-ZA-2190 | Repair for irrigation Works | 2027-06-29 → 2027-06-22 (-7d) | 2027-06-30 → 2027-06-23 (-7d) |  |  | 0d → 6d |  |
| 12 | **IRRIGATION WORKS IN ( PH2-A-MCB0 )** | 2027-05-06 → 2027-05-08 (+2d) | 2027-07-04 → 2027-06-28 (-6d) |  |  |  |  |
| 7 | **Pre install** | 2027-05-06 → 2027-05-08 (+2d) | 2027-06-03 → 2027-05-29 (-5d) |  |  |  |  |
| SDR-2-CON-IR-ZA-2200 | Pre Install for irrigation Works | 2027-05-06 → 2027-05-08 (+2d) | 2027-06-03 → 2027-05-29 (-5d) | 20d → 14d |  | 1d → 6d |  |
| 8 | **install** | 2027-06-05 → 2027-05-30 (-6d) | 2027-06-17 → 2027-06-12 (-5d) |  |  |  |  |
| SDR-2-CON-IR-ZA-2210 | Installation of HDPE Pipe | 2027-06-05 → 2027-05-30 (-6d) | 2027-06-17 → 2027-06-12 (-5d) |  |  | 1d → 6d |  |
| 9 | **Finishing** | 2027-06-19 → 2027-06-13 (-6d) | 2027-06-27 → 2027-06-21 (-6d) |  |  |  |  |
| SDR-2-CON-IR-ZA-2220 | Finishing Works for irrigation | 2027-06-19 → 2027-06-13 (-6d) | 2027-06-27 → 2027-06-21 (-6d) |  |  | 1d → 6d |  |
| 10 | **Repairs** | 2027-06-28 → 2027-06-22 (-6d) | 2027-07-04 → 2027-06-28 (-6d) |  |  |  |  |
| SDR-2-CON-IR-ZA-2230 | Repair for irrigation Works | 2027-06-28 → 2027-06-22 (-6d) | 2027-07-04 → 2027-06-28 (-6d) |  |  | 1d → 6d |  |
| 3 | **IRRIGATION WORKS IN ( PH2-A-MCC0 )** | 2027-05-06 → 2026-09-28 (-220d) | 2027-07-03 → 2027-06-27 (-6d) |  |  |  |  |
| 7 | **Pre install** | 2027-05-06 → 2026-09-28 (-220d) | 2027-06-03 → 2027-05-29 (-5d) |  |  |  |  |
| SDR-2-CON-IR-ZA-2240 | Pre Install for irrigation Works | 2027-05-06 → 2026-09-28 A (-220d) | 2027-06-03 → 2027-05-29 (-5d) | 20d → 14d | 0% → 25% | 1d → 6d |  |
| 8 | **install** | 2027-06-05 → 2027-05-30 (-6d) | 2027-06-19 → 2027-06-13 (-6d) |  |  |  |  |
| SDR-2-CON-IR-ZA-2250 | Installation of HDPE Pipe | 2027-06-05 → 2027-05-30 (-6d) | 2027-06-19 → 2027-06-13 (-6d) |  |  | 1d → 6d |  |
| 9 | **Finishing** | 2027-06-20 → 2027-06-14 (-6d) | 2027-06-30 → 2027-06-24 (-6d) |  |  |  |  |
| SDR-2-CON-IR-ZA-2260 | Finishing Works for irrigation | 2027-06-20 → 2027-06-14 (-6d) | 2027-06-30 → 2027-06-24 (-6d) |  |  | 1d → 6d |  |
| 10 | **Repairs** | 2027-07-01 → 2027-06-26 (-5d) | 2027-07-03 → 2027-06-27 (-6d) |  |  |  |  |
| SDR-2-CON-IR-ZA-2270 | Repair for irrigation Works | 2027-07-01 → 2027-06-26 (-5d) | 2027-07-03 → 2027-06-27 (-6d) |  |  | 1d → 6d |  |
| 4 | **IRRIGATION WORKS IN ( PH2-A-MCD0 )** |  | 2027-07-04 → 2027-06-14 (-20d) |  |  |  |  |
| 7 | **Pre install** |  | 2027-06-03 → 2027-06-05 (+2d) |  |  |  |  |
| SDR-2-CON-IR-ZA-2280 | Pre Install for irrigation Works |  | 2027-06-03 → 2027-06-05 (+2d) |  | 10% → 25% | 1d → 18d |  |
| 8 | **install** |  | 2027-06-19 → 2027-06-05 (-14d) |  |  |  |  |
| SDR-2-CON-IR-ZA-2290 | Installation of HDPE Pipe |  | 2027-06-19 → 2027-06-05 (-14d) |  | 10% → 25% | 1d → 18d | SDR-2-CON-IR-ZA-2280 → SDR-2-CON-IR-ZA-2280 FF |
| 9 | **Finishing** | 2027-06-20 → 2027-06-06 (-14d) | 2027-06-29 → 2027-06-09 (-20d) |  |  |  |  |
| SDR-2-CON-IR-ZA-2300 | Finishing Works for irrigation | 2027-06-20 → 2027-06-06 (-14d) | 2027-06-29 → 2027-06-09 (-20d) | 9d → 4d |  | 1d → 18d |  |
| 10 | **Repairs** | 2027-06-30 → 2027-06-10 (-20d) | 2027-07-04 → 2027-06-14 (-20d) |  |  |  |  |
| SDR-2-CON-IR-ZA-2310 | Repair for irrigation Works | 2027-06-30 → 2027-06-10 (-20d) | 2027-07-04 → 2027-06-14 (-20d) |  |  | 1d → 18d |  |
| 5 | **IRRIGATION WORKS IN ( PH2-A-MCE0 )** | 2027-05-06 → 2026-09-28 (-220d) | 2027-07-04 → 2027-06-28 (-6d) |  |  |  |  |
| 7 | **Pre install** | 2027-05-06 → 2026-09-28 (-220d) | 2027-06-03 → 2027-05-29 (-5d) |  |  |  |  |
| SDR-2-CON-IR-ZA-2320 | Pre Install for irrigation Works | 2027-05-06 → 2026-09-28 A (-220d) | 2027-06-03 → 2027-05-29 (-5d) | 20d → 14d | 0% → 25% | 1d → 6d |  |
| 8 | **install** | 2027-06-05 → 2026-10-01 (-247d) | 2027-06-19 → 2027-06-13 (-6d) |  |  |  |  |
| SDR-2-CON-IR-ZA-2330 | Installation of HDPE Pipe | 2027-06-05 → 2026-10-01 A (-247d) | 2027-06-19 → 2027-06-13 (-6d) |  | 0% → 25% | 1d → 6d |  |
| 9 | **Finishing** | 2027-06-20 → 2027-06-14 (-6d) | 2027-06-30 → 2027-06-24 (-6d) |  |  |  |  |
| SDR-2-CON-IR-ZA-2340 | Finishing Works for irrigation | 2027-06-20 → 2027-06-14 (-6d) | 2027-06-30 → 2027-06-24 (-6d) |  |  | 1d → 6d |  |
| 10 | **Repairs** | 2027-07-01 → 2027-06-26 (-5d) | 2027-07-04 → 2027-06-28 (-6d) |  |  |  |  |
| SDR-2-CON-IR-ZA-2350 | Repair for irrigation Works | 2027-07-01 → 2027-06-26 (-5d) | 2027-07-04 → 2027-06-28 (-6d) |  |  | 1d → 6d |  |
| 6 | **IRRIGATION WORKS IN ( PH2-A-MCF0 )** | 2027-05-06 → 2027-05-08 (+2d) | 2027-07-04 → 2027-06-28 (-6d) |  |  |  |  |
| 7 | **Pre install** | 2027-05-06 → 2027-05-08 (+2d) | 2027-06-03 → 2027-05-29 (-5d) |  |  |  |  |
| SDR-2-CON-IR-ZA-2360 | Pre Install for irrigation Works | 2027-05-06 → 2027-05-08 (+2d) | 2027-06-03 → 2027-05-29 (-5d) | 20d → 14d |  | 1d → 6d |  |
| 8 | **install** | 2027-06-05 → 2027-05-30 (-6d) | 2027-06-19 → 2027-06-13 (-6d) |  |  |  |  |
| SDR-2-CON-IR-ZA-2370 | Installation of HDPE Pipe | 2027-06-05 → 2027-05-30 (-6d) | 2027-06-19 → 2027-06-13 (-6d) |  |  | 1d → 6d |  |
| 9 | **Finishing** | 2027-06-20 → 2027-06-14 (-6d) | 2027-06-30 → 2027-06-24 (-6d) |  |  |  |  |
| SDR-2-CON-IR-ZA-2380 | Finishing Works for irrigation | 2027-06-20 → 2027-06-14 (-6d) | 2027-06-30 → 2027-06-24 (-6d) |  |  | 1d → 6d |  |
| 10 | **Repairs** | 2027-07-01 → 2027-06-26 (-5d) | 2027-07-04 → 2027-06-28 (-6d) |  |  |  |  |
| SDR-2-CON-IR-ZA-2390 | Repair for irrigation Works | 2027-07-01 → 2027-06-26 (-5d) | 2027-07-04 → 2027-06-28 (-6d) |  |  | 1d → 6d |  |
| 7 | **IRRIGATION WORKS IN ( PH2-A-MCG0 )** | 2027-05-06 → 2027-05-08 (+2d) | 2027-07-04 → 2027-06-28 (-6d) |  |  |  |  |
| 7 | **Pre install** | 2027-05-06 → 2027-05-08 (+2d) | 2027-06-03 → 2027-05-29 (-5d) |  |  |  |  |
| SDR-2-CON-IR-ZA-2400 | Pre Install for irrigation Works | 2027-05-06 → 2027-05-08 (+2d) | 2027-06-03 → 2027-05-29 (-5d) | 20d → 14d |  | 1d → 6d |  |
| 8 | **install** | 2027-06-05 → 2027-05-30 (-6d) | 2027-06-19 → 2027-06-13 (-6d) |  |  |  |  |
| SDR-2-CON-IR-ZA-2410 | Installation of HDPE Pipe | 2027-06-05 → 2027-05-30 (-6d) | 2027-06-19 → 2027-06-13 (-6d) |  |  | 1d → 6d |  |
| 9 | **Finishing** | 2027-06-20 → 2027-06-14 (-6d) | 2027-07-01 → 2027-06-26 (-5d) |  |  |  |  |
| SDR-2-CON-IR-ZA-2420 | Finishing Works for irrigation | 2027-06-20 → 2027-06-14 (-6d) | 2027-07-01 → 2027-06-26 (-5d) |  |  | 1d → 6d |  |
| 10 | **Repairs** | 2027-07-03 → 2027-06-27 (-6d) | 2027-07-04 → 2027-06-28 (-6d) |  |  |  |  |

| ID | Task | Start | Finish | Duration | Complete | Total float | Predecessors |
| --- | --- | --- | --- | --- | --- | --- | --- |
| SDR-2-CON-IR-ZA-2430 | Repair for irrigation Works | 2027-07-03 → 2027-06-27 (-6d) | 2027-07-04 → 2027-06-28 (-6d) |  |  | 1d → 6d |  |
| 8 | **IRRIGATION WORKS IN ( PH2-A-MCH0 )** | 2027-05-06 → 2027-05-08 (+2d) | 2027-07-04 → 2027-06-28 (-6d) |  |  |  |  |
| 7 | **Pre install** | 2027-05-06 → 2027-05-08 (+2d) | 2027-06-03 → 2027-05-29 (-5d) |  |  |  |  |
| SDR-2-CON-IR-ZA-2440 | Pre Install for irrigation Works | 2027-05-06 → 2027-05-08 (+2d) | 2027-06-03 → 2027-05-29 (-5d) | 20d → 14d |  | 1d → 6d |  |
| 8 | **install** | 2027-06-05 → 2027-05-30 (-6d) | 2027-06-19 → 2027-06-13 (-6d) |  |  |  |  |
| SDR-2-CON-IR-ZA-2450 | Installation of HDPE Pipe | 2027-06-05 → 2027-05-30 (-6d) | 2027-06-19 → 2027-06-13 (-6d) |  |  | 1d → 6d |  |
| 9 | **Finishing** | 2027-06-20 → 2027-06-14 (-6d) | 2027-07-01 → 2027-06-26 (-5d) |  |  |  |  |
| SDR-2-CON-IR-ZA-2460 | Finishing Works for irrigation | 2027-06-20 → 2027-06-14 (-6d) | 2027-07-01 → 2027-06-26 (-5d) |  |  | 1d → 6d |  |
| 10 | **Repairs** | 2027-07-03 → 2027-06-27 (-6d) | 2027-07-04 → 2027-06-28 (-6d) |  |  |  |  |
| SDR-2-CON-IR-ZA-2470 | Repair for irrigation Works | 2027-07-03 → 2027-06-27 (-6d) | 2027-07-04 → 2027-06-28 (-6d) |  |  | 1d → 6d |  |
| 9 | **IRRIGATION WORKS IN ( PH2-ART-MC00 )** | 2027-05-06 → 2026-09-28 (-220d) | 2027-07-04 → 2027-06-28 (-6d) |  |  |  |  |
| 7 | **Pre install** | 2027-05-06 → 2026-09-28 (-220d) | 2027-06-03 → 2027-06-05 (+2d) |  |  |  |  |
| SDR-2-CON-IR-ZA-2480 | Pre Install for irrigation Works | 2027-05-06 → 2026-09-28 A (-220d) | 2027-06-03 → 2027-06-05 (+2d) |  | 0% → 25% | 1d → 16d |  |
| 8 | **install** | 2027-06-05 → 2026-10-01 (-247d) | 2027-06-19 → 2027-06-01 (-18d) |  |  |  |  |
| SDR-2-CON-IR-ZA-2490 | Installation of HDPE Pipe | 2027-06-05 → 2026-10-01 A (-247d) | 2027-06-19 → 2027-06-01 (-18d) |  | 0% → 25% | 1d → 16d | SDR-2-CON-IR-ZA-2480 → SDR-2-CON-IR-ZA-2480 SS+10d |
| 9 | **Finishing** | 2027-06-20 → 2027-06-02 (-18d) | 2027-07-01 → 2027-06-14 (-17d) |  |  |  |  |
| SDR-2-CON-IR-ZA-2500 | Finishing Works for irrigation | 2027-06-20 → 2027-06-02 (-18d) | 2027-07-01 → 2027-06-14 (-17d) |  |  | 1d → 16d |  |
| 10 | **Repairs** | 2027-07-03 → 2027-06-27 (-6d) | 2027-07-04 → 2027-06-28 (-6d) |  |  |  |  |
| SDR-2-CON-IR-ZA-2510 | Repair for irrigation Works | 2027-07-03 → 2027-06-27 (-6d) | 2027-07-04 → 2027-06-28 (-6d) |  |  | 1d → 6d |  |
| 10 | **IRRIGATION WORKS IN ( PH2-ART-MC10 )** |  | 2027-07-04 → 2027-06-28 (-6d) |  |  |  |  |
| 7 | **Pre install** |  | 2027-05-06 → 2027-05-08 (+2d) |  |  |  |  |
| SDR-2-CON-IR-ZA-2520 | Pre Install for irrigation Works |  | 2027-05-06 → 2027-05-08 (+2d) |  |  | 2.7d → 1.7d |  |
| 8 | **install** | 2027-05-08 → 2026-10-03 (-217d) | 2027-05-27 → 2027-05-29 (+2d) |  |  |  |  |
| SDR-2-CON-IR-ZA-2530 | Installation of HDPE Pipe | 2027-05-08 → 2026-10-03 A (-217d) | 2027-05-27 → 2027-05-29 (+2d) |  | 0% → 10% | 20d → 19d |  |
| 9 | **Finishing** | 2027-05-29 → 2027-05-30 (+1d) | 2027-06-09 → 2027-06-10 (+1d) |  |  |  |  |
| SDR-2-CON-IR-ZA-2540 | Finishing Works for irrigation | 2027-05-29 → 2027-05-30 (+1d) | 2027-06-09 → 2027-06-10 (+1d) |  |  | 20d → 19d |  |
| 10 | **Repairs** | 2027-07-03 → 2027-06-27 (-6d) | 2027-07-04 → 2027-06-28 (-6d) |  |  |  |  |
| SDR-2-CON-IR-ZA-2550 | Repair for irrigation Works | 2027-07-03 → 2027-06-27 (-6d) | 2027-07-04 → 2027-06-28 (-6d) |  |  | 1d → 6d |  |
| 13 | **Irrigation Controllers** | 2027-05-04 → 2027-05-05 (+1d) | 2027-07-03 → 2027-06-27 (-6d) |  |  |  |  |
| 1 | **Pre install** | 2027-05-04 → 2027-05-05 (+1d) | 2027-06-03 → 2027-06-05 (+2d) |  |  |  |  |
| SDR-2-CON-IR-ZA-2070 | Pre Install of Irrigation controllers | 2027-05-04 → 2027-05-05 (+1d) | 2027-06-03 → 2027-06-05 (+2d) |  |  | 2.7d → 12.7d |  |
| 2 | **install** | 2027-06-03 → 2027-05-23 (-11d) | 2027-06-21 → 2027-06-09 (-12d) |  |  |  |  |
| SDR-2-CON-IR-ZA-2760 | Install Irrigation controllers | 2027-06-03 → 2027-05-23 (-11d) | 2027-06-21 → 2027-06-09 (-12d) |  |  | 2.7d → 12.7d | SDR-2-CON-IR-ZA-2070 → SDR-2-CON-IR-ZA-2070 SS+10d |
| 3 | **Finishing** | 2027-06-21 → 2027-06-09 (-12d) | 2027-06-30 → 2027-06-19 (-11d) |  |  |  |  |
| SDR-2-CON-IR-ZA-2770 | Finishing of Irrigation controllers | 2027-06-21 → 2027-06-09 (-12d) | 2027-06-30 → 2027-06-19 (-11d) |  |  | 2.7d → 12.7d |  |
| 4 | **Repairs** | 2027-07-03 → 2027-06-27 (-6d) | 2027-07-03 → 2027-06-27 (-6d) |  |  |  |  |
| SDR-2-CON-IR-ZA-2780 | Repairs of Irrigation controllers | 2027-07-03 → 2027-06-27 (-6d) | 2027-07-03 → 2027-06-27 (-6d) |  |  | 1d → 6d |  |
| 14 | **Decoder Cable & Conduit Works** | 2027-05-04 → 2027-05-05 (+1d) | 2027-07-03 → 2027-06-29 (-4d) |  |  |  |  |
| 1 | **Pre install** | 2027-05-04 → 2027-05-05 (+1d) | 2027-06-03 → 2027-06-05 (+2d) |  |  |  |  |
| SDR-2-CON-IR-ZA-2080 | Pre Install of Decoder Cable & Conduits Works | 2027-05-04 → 2027-05-05 (+1d) | 2027-06-03 → 2027-06-05 (+2d) |  |  | 5.7d → 4.7d |  |
| 2 | **install** | 2027-06-03 → 2027-06-05 (+2d) | 2027-06-21 → 2027-06-22 (+1d) |  |  |  |  |
| SDR-2-CON-IR-ZA-2090 | Install of Decoder Cable & Conduits Works | 2027-06-03 → 2027-06-05 (+2d) | 2027-06-21 → 2027-06-22 (+1d) |  |  | 5.7d → 4.7d |  |
| 3 | **Finishing** | 2027-06-21 → 2027-06-22 (+1d) | 2027-06-27 → 2027-06-28 (+1d) |  |  |  |  |
| SDR-2-CON-IR-ZA-2790 | Finishing of Decoder Cable & Conduits Works | 2027-06-21 → 2027-06-22 (+1d) | 2027-06-27 → 2027-06-28 (+1d) |  |  | 5.7d → 4.7d |  |
| 4 | **Repairs** | 2027-07-03 → 2027-06-28 (-5d) | 2027-07-03 → 2027-06-29 (-4d) |  |  |  |  |
| SDR-2-CON-IR-ZA-2800 | Repair of Decoder Cable & Conduits Works | 2027-07-03 → 2027-06-28 (-5d) | 2027-07-03 → 2027-06-29 (-4d) |  |  | 1d → 4.7d |  |
| 15 | **Solar Power System Installation** | 2027-05-04 → 2027-05-05 (+1d) | 2027-07-04 → 2027-06-30 (-4d) |  |  |  |  |
| 1 | **Pre install** | 2027-05-04 → 2027-05-05 (+1d) | 2027-06-03 → 2027-06-05 (+2d) |  |  |  |  |
| SDR-2-CON-IR-ZA-2100 | Pre Install of Solar Power System Installation | 2027-05-04 → 2027-05-05 (+1d) | 2027-06-03 → 2027-06-05 (+2d) |  |  | 5.7d → 4.7d |  |
| 2 | **install** | 2027-06-03 → 2027-06-05 (+2d) | 2027-06-21 → 2027-06-22 (+1d) |  |  |  |  |
| SDR-2-CON-IR-ZA-2810 | Install of Pre Install of Solar Power System Installation | 2027-06-03 → 2027-06-05 (+2d) | 2027-06-21 → 2027-06-22 (+1d) |  |  | 5.7d → 4.7d |  |
| 3 | **Finishing** | 2027-06-21 → 2027-06-22 (+1d) | 2027-06-28 → 2027-06-29 (+1d) |  |  |  |  |
| SDR-2-CON-IR-ZA-2820 | Finishing of Pre Install of Solar Power System Installation | 2027-06-21 → 2027-06-22 (+1d) | 2027-06-28 → 2027-06-29 (+1d) |  |  | 5.7d → 4.7d |  |
| 4 | **Repairs** | 2027-07-04 → 2027-06-29 (-5d) | 2027-07-04 → 2027-06-30 (-4d) |  |  |  |  |
| SDR-2-CON-IR-ZA-2830 | Repair of Solar Power System Installation | 2027-07-04 → 2027-06-29 (-5d) | 2027-07-04 → 2027-06-30 (-4d) |  |  | 1d → 4.7d |  |
| 16 | **System Integration & Programming** | 2027-05-04 → 2027-05-05 (+1d) | 2027-07-04 → 2027-06-30 (-4d) |  |  |  |  |
| 1 | **Pre install** | 2027-05-04 → 2027-05-05 (+1d) | 2027-06-03 → 2027-06-05 (+2d) |  |  |  |  |
| SDR-2-CON-IR-ZA-2110 | Pre Install of System Integration & Programming | 2027-05-04 → 2027-05-05 (+1d) | 2027-06-03 → 2027-06-05 (+2d) |  |  | 2.7d → 12.7d |  |
| 2 | **install** | 2027-06-03 → 2027-05-23 (-11d) | 2027-06-21 → 2027-06-09 (-12d) |  |  |  |  |
| SDR-2-CON-IR-ZA-2840 | Install of System Integration & Programming | 2027-06-03 → 2027-05-23 (-11d) | 2027-06-21 → 2027-06-09 (-12d) |  |  | 2.7d → 12.7d | SDR-2-CON-IR-ZA-2110 → SDR-2-CON-IR-ZA-2110 SS+10d |
| 3 | **Finishing** | 2027-06-21 → 2027-06-09 (-12d) | 2027-06-30 → 2027-06-19 (-11d) |  |  |  |  |
| SDR-2-CON-IR-ZA-2850 | Finishing of System Integration & Programming | 2027-06-21 → 2027-06-09 (-12d) | 2027-06-30 → 2027-06-19 (-11d) |  |  | 2.7d → 12.7d |  |
| 4 | **Repairs** | 2027-07-04 → 2027-06-29 (-5d) | 2027-07-04 → 2027-06-30 (-4d) |  |  |  |  |
| SDR-2-CON-IR-ZA-2860 | Repair of System Integration & Programming | 2027-07-04 → 2027-06-29 (-5d) | 2027-07-04 → 2027-06-30 (-4d) |  |  | 1d → 4.7d |  |
| 1 | **Landscape Works** | 2027-05-04 → 2027-05-05 (+1d) | 2027-07-04 → 2027-06-30 (-4d) |  |  |  |  |
| 1 | **GROUND COVER** | 2027-05-04 → 2027-05-05 (+1d) | 2027-06-13 → 2027-06-05 (-8d) |  |  |  |  |
| SDR-2-CON-LS-ZA-1000 | Clearing & grubbing of landscape areas | 2027-05-04 → 2027-05-05 (+1d) | 2027-05-27 → 2027-05-29 (+2d) |  |  | 2.7d → 1.7d |  |
| SDR-2-CON-LS-ZA-1010 | Grass laying | 2027-05-27 → 2027-05-13 (-14d) | 2027-06-13 → 2027-06-05 (-8d) |  |  | 2.7d → 9.7d | SDR-2-CON-LS-ZA-1000 → SDR-2-CON-LS-ZA-1000 SS+7d |
| 2 | **Trees** | 2027-06-13 → 2027-06-05 (-8d) | 2027-07-03 → 2027-06-24 (-9d) |  |  |  |  |
| SDR-2-CON-LS-ZA-1020 | Albizia lebbeck tress planting. | 2027-06-13 → 2027-06-05 (-8d) | 2027-06-29 → 2027-06-21 (-8d) |  |  | 2.7d → 9.7d |  |

| ID | Task | Start | Finish | Total float |
| --- | --- | --- | --- | --- |
| SDR-2-CON-LS-ZA-1030 | Tabopia tress planting. | 2027-06-13 → 2027-06-05 (-8d) | 2027-06-29 → 2027-06-21 (-8d) | 2.7d → 9.7d |
| SDR-2-CON-LS-ZA-1040 | Plumeria alba tress planting. | 2027-06-16 → 2027-06-08 (-8d) | 2027-07-03 → 2027-06-24 (-9d) | 2.7d → 9.7d |
| SDR-2-CON-LS-ZA-1050 | Cassia glauca tress planting. | 2027-06-16 → 2027-06-08 (-8d) | 2027-07-03 → 2027-06-24 (-9d) | 2.7d → 9.7d |
| 3 | **Miscellaneous landscaping items** | 2027-06-20 → 2027-06-15 (-5d) | 2027-07-04 → 2027-06-30 (-4d) |  |
| SDR-2-CON-LS-ZA-1060 | Gravel/Stone mulch: 75mm thick Hard, durable stone, washed free of loam, sand, clay, | 2027-06-20 → 2027-06-15 (-5d) | 2027-07-04 → 2027-06-30 (-4d) | 1d → 4.7d |
| ZG | **ZONE G** | 2027-05-04 → 2027-05-05 (+1d) | 2027-07-04 → 2027-07-05 (+1d) |  |
| 2 | **Irrigation Works** | 2027-05-04 → 2027-05-05 (+1d) | 2027-07-04 → 2027-07-05 (+1d) |  |
| 11 | **IRRIGATION WORKS IN ( PH2-G-MCE0 )** | 2027-05-06 → 2027-05-08 (+2d) | 2027-07-04 → 2027-07-05 (+1d) |  |
| 7 | **Pre install** | 2027-05-06 → 2027-05-08 (+2d) | 2027-06-03 → 2027-06-05 (+2d) |  |
| SDR-2-CON-IR-ZA-2560 | Pre Install for irrigation Works | 2027-05-06 → 2027-05-08 (+2d) | 2027-06-03 → 2027-06-05 (+2d) | 1d → 0d |
| 8 | **install** | 2027-06-05 → 2027-06-06 (+1d) | 2027-06-19 → 2027-06-20 (+1d) |  |
| SDR-2-CON-IR-ZA-2570 | Installation of HDPE Pipe | 2027-06-05 → 2027-06-06 (+1d) | 2027-06-19 → 2027-06-20 (+1d) | 1d → 0d |
| 9 | **Finishing** | 2027-06-20 → 2027-06-21 (+1d) | 2027-06-30 → 2027-07-01 (+1d) |  |
| SDR-2-CON-IR-ZA-2580 | Finishing Works for irrigation | 2027-06-20 → 2027-06-21 (+1d) | 2027-06-30 → 2027-07-01 (+1d) | 1d → 0d |
| 10 | **Repairs** | 2027-07-01 → 2027-07-03 (+2d) | 2027-07-04 → 2027-07-05 (+1d) |  |
| SDR-2-CON-IR-ZA-2590 | Repair for irrigation Works | 2027-07-01 → 2027-07-03 (+2d) | 2027-07-04 → 2027-07-05 (+1d) | 1d → 0d |
| 5 | **IRRIGATION WORKS IN ( PH2-G-MCZ0 )** | 2027-05-06 → 2027-05-08 (+2d) | 2027-07-04 → 2027-07-05 (+1d) |  |
| 7 | **Pre install** | 2027-05-06 → 2027-05-08 (+2d) | 2027-06-03 → 2027-06-05 (+2d) |  |
| SDR-2-CON-IR-ZA-2600 | Pre Install for irrigation Works | 2027-05-06 → 2027-05-08 (+2d) | 2027-06-03 → 2027-06-05 (+2d) | 1d → 0d |
| 8 | **install** | 2027-06-05 → 2027-06-06 (+1d) | 2027-06-19 → 2027-06-20 (+1d) |  |
| SDR-2-CON-IR-ZA-2610 | Installation of HDPE Pipe | 2027-06-05 → 2027-06-06 (+1d) | 2027-06-19 → 2027-06-20 (+1d) | 1d → 0d |
| 9 | **Finishing** | 2027-06-20 → 2027-06-21 (+1d) | 2027-06-30 → 2027-07-01 (+1d) |  |
| SDR-2-CON-IR-ZA-2620 | Finishing Works for irrigation | 2027-06-20 → 2027-06-21 (+1d) | 2027-06-30 → 2027-07-01 (+1d) | 1d → 0d |
| 10 | **Repairs** | 2027-07-01 → 2027-07-03 (+2d) | 2027-07-04 → 2027-07-05 (+1d) |  |
| SDR-2-CON-IR-ZA-2630 | Repair for irrigation Works | 2027-07-01 → 2027-07-03 (+2d) | 2027-07-04 → 2027-07-05 (+1d) | 1d → 0d |
| 1 | **IRRIGATION WORKS IN ( PH2-G-MCA0 )** | 2027-05-06 → 2027-05-08 (+2d) | 2027-07-04 → 2027-07-05 (+1d) |  |
| 7 | **Pre install** | 2027-05-06 → 2027-05-08 (+2d) | 2027-06-02 → 2027-06-03 (+1d) |  |
| SDR-2-CON-IR-ZA-2640 | Pre Install for irrigation Works | 2027-05-06 → 2027-05-08 (+2d) | 2027-06-02 → 2027-06-03 (+1d) | 1d → 0d |
| 8 | **install** | 2027-06-03 → 2027-06-05 (+2d) | 2027-06-17 → 2027-06-19 (+2d) |  |
| SDR-2-CON-IR-ZA-2650 | Installation of HDPE Pipe | 2027-06-03 → 2027-06-05 (+2d) | 2027-06-17 → 2027-06-19 (+2d) | 1d → 0d |
| 9 | **Finishing** | 2027-06-19 → 2027-06-20 (+1d) | 2027-07-01 → 2027-07-03 (+2d) |  |
| SDR-2-CON-IR-ZA-2660 | Finishing Works for irrigation | 2027-06-19 → 2027-06-20 (+1d) | 2027-07-01 → 2027-07-03 (+2d) | 1d → 0d |
| 10 | **Repairs** | 2027-07-03 → 2027-07-04 (+1d) | 2027-07-04 → 2027-07-05 (+1d) |  |
| SDR-2-CON-IR-ZA-2670 | Repair for irrigation Works | 2027-07-03 → 2027-07-04 (+1d) | 2027-07-04 → 2027-07-05 (+1d) | 1d → 0d |
| 2 | **IRRIGATION WORKS IN ( PH2-G-MCF0 )** | 2027-05-06 → 2027-05-08 (+2d) | 2027-07-04 → 2027-07-05 (+1d) |  |
| 7 | **Pre install** | 2027-05-06 → 2027-05-08 (+2d) | 2027-06-03 → 2027-06-05 (+2d) |  |
| SDR-2-CON-IR-ZA-2680 | Pre Install for irrigation Works | 2027-05-06 → 2027-05-08 (+2d) | 2027-06-03 → 2027-06-05 (+2d) | 1d → 0d |
| 8 | **install** | 2027-06-05 → 2027-06-06 (+1d) | 2027-06-19 → 2027-06-20 (+1d) |  |
| SDR-2-CON-IR-ZA-2690 | Installation of HDPE Pipe | 2027-06-05 → 2027-06-06 (+1d) | 2027-06-19 → 2027-06-20 (+1d) | 1d → 0d |
| 9 | **Finishing** | 2027-06-20 → 2027-06-21 (+1d) | 2027-07-01 → 2027-07-03 (+2d) |  |
| SDR-2-CON-IR-ZA-2700 | Finishing Works for irrigation | 2027-06-20 → 2027-06-21 (+1d) | 2027-07-01 → 2027-07-03 (+2d) | 1d → 0d |
| 10 | **Repairs** | 2027-07-03 → 2027-07-04 (+1d) | 2027-07-04 → 2027-07-05 (+1d) |  |
| SDR-2-CON-IR-ZA-2710 | Repair for irrigation Works | 2027-07-03 → 2027-07-04 (+1d) | 2027-07-04 → 2027-07-05 (+1d) | 1d → 0d |
| 3 | **IRRIGATION WORKS IN ( PH2-G-MCG0 )** | 2027-05-06 → 2027-05-08 (+2d) | 2027-07-04 → 2027-07-05 (+1d) |  |
| 7 | **Pre install** | 2027-05-06 → 2027-05-08 (+2d) | 2027-06-02 → 2027-06-03 (+1d) |  |
| SDR-2-CON-IR-ZA-2720 | Pre Install for irrigation Works | 2027-05-06 → 2027-05-08 (+2d) | 2027-06-02 → 2027-06-03 (+1d) | 1d → 0d |
| 8 | **install** | 2027-06-03 → 2027-06-05 (+2d) | 2027-06-17 → 2027-06-19 (+2d) |  |
| SDR-2-CON-IR-ZA-2730 | Installation of HDPE Pipe | 2027-06-03 → 2027-06-05 (+2d) | 2027-06-17 → 2027-06-19 (+2d) | 1d → 0d |
| 9 | **Finishing** | 2027-06-19 → 2027-06-20 (+1d) | 2027-07-01 → 2027-07-03 (+2d) |  |
| SDR-2-CON-IR-ZA-2740 | Finishing Works for irrigation | 2027-06-19 → 2027-06-20 (+1d) | 2027-07-01 → 2027-07-03 (+2d) | 1d → 0d |
| 10 | **Repairs** | 2027-07-03 → 2027-07-04 (+1d) | 2027-07-04 → 2027-07-05 (+1d) |  |
| SDR-2-CON-IR-ZA-2750 | Repair for irrigation Works | 2027-07-03 → 2027-07-04 (+1d) | 2027-07-04 → 2027-07-05 (+1d) | 1d → 0d |
| 13 | **Irrigation Controllers** | 2027-05-04 → 2027-05-05 (+1d) | 2027-07-04 → 2027-07-05 (+1d) |  |
| 1 | **Pre install** | 2027-05-04 → 2027-05-05 (+1d) | 2027-06-03 → 2027-06-05 (+2d) |  |
| SDR-2-CON-IR-ZA-2870 | Pre Install of Irrigation controllers | 2027-05-04 → 2027-05-05 (+1d) | 2027-06-03 → 2027-06-05 (+2d) | 2.7d → 1.7d |
| 2 | **install** | 2027-06-03 → 2027-06-05 (+2d) | 2027-06-21 → 2027-06-22 (+1d) |  |
| SDR-2-CON-IR-ZA-2880 | Install Irrigation controllers | 2027-06-03 → 2027-06-05 (+2d) | 2027-06-21 → 2027-06-22 (+1d) | 2.7d → 1.7d |
| 3 | **Finishing** | 2027-06-21 → 2027-06-22 (+1d) | 2027-06-30 → 2027-07-01 (+1d) |  |
| SDR-2-CON-IR-ZA-2890 | Finishing of Irrigation controllers | 2027-06-21 → 2027-06-22 (+1d) | 2027-06-30 → 2027-07-01 (+1d) | 2.7d → 1.7d |
| 4 | **Repairs** | 2027-07-03 → 2027-07-04 (+1d) | 2027-07-04 → 2027-07-05 (+1d) |  |
| SDR-2-CON-IR-ZA-2900 | Repairs of Irrigation controllers | 2027-07-03 → 2027-07-04 (+1d) | 2027-07-04 → 2027-07-05 (+1d) | 1d → 0d |
| 14 | **Decoder Cable & Conduit Works** | 2027-05-04 → 2027-05-05 (+1d) | 2027-07-04 → 2027-07-05 (+1d) |  |
| 1 | **Pre install** | 2027-05-04 → 2027-05-05 (+1d) | 2027-06-03 → 2027-06-05 (+2d) |  |
| SDR-2-CON-IR-ZA-2910 | Pre Install of Decoder Cable & Conduits Works | 2027-05-04 → 2027-05-05 (+1d) | 2027-06-03 → 2027-06-05 (+2d) | 2.7d → 1.7d |
| 2 | **install** | 2027-06-03 → 2027-06-05 (+2d) | 2027-06-21 → 2027-06-22 (+1d) |  |
| SDR-2-CON-IR-ZA-2920 | Install of Decoder Cable & Conduits Works | 2027-06-03 → 2027-06-05 (+2d) | 2027-06-21 → 2027-06-22 (+1d) | 2.7d → 1.7d |
| 3 | **Finishing** | 2027-06-21 → 2027-06-22 (+1d) | 2027-07-01 → 2027-07-03 (+2d) |  |
| SDR-2-CON-IR-ZA-2930 | Finishing of Decoder Cable & Conduits Works | 2027-06-21 → 2027-06-22 (+1d) | 2027-07-01 → 2027-07-03 (+2d) | 2.7d → 1.7d |
| 4 | **Repairs** | 2027-07-04 → 2027-07-05 (+1d) | 2027-07-04 → 2027-07-05 (+1d) |  |
| SDR-2-CON-IR-ZA-2940 | Repair of Decoder Cable & Conduits Works | 2027-07-04 → 2027-07-05 (+1d) | 2027-07-04 → 2027-07-05 (+1d) | 1d → 0d |

| ID | Task | Start | Finish | Total float |
| --- | --- | --- | --- | --- |
| 15 | **Solar Power System Installation** | 2027-05-04 → 2027-05-05 (+1d) | 2027-07-03 → 2027-07-04 (+1d) |  |
| 1 | **Pre install** | 2027-05-04 → 2027-05-05 (+1d) | 2027-06-03 → 2027-06-05 (+2d) |  |
| SDR-2-CON-IR-ZA-2950 | Pre Install of Solar Power System Installation | 2027-05-04 → 2027-05-05 (+1d) | 2027-06-03 → 2027-06-05 (+2d) | 2.7d → 1.7d |
| 2 | **install** | 2027-06-03 → 2027-06-05 (+2d) | 2027-06-21 → 2027-06-22 (+1d) |  |
| SDR-2-CON-IR-ZA-2960 | Install of Pre Install of Solar Power System Installation | 2027-06-03 → 2027-06-05 (+2d) | 2027-06-21 → 2027-06-22 (+1d) | 2.7d → 1.7d |
| 3 | **Finishing** | 2027-06-21 → 2027-06-22 (+1d) | 2027-06-29 → 2027-06-30 (+1d) |  |
| SDR-2-CON-IR-ZA-2970 | Finishing of Pre Install of Solar Power System Installation | 2027-06-21 → 2027-06-22 (+1d) | 2027-06-29 → 2027-06-30 (+1d) | 2.7d → 1.7d |
| 4 | **Repairs** | 2027-06-29 → 2027-06-30 (+1d) | 2027-07-03 → 2027-07-04 (+1d) |  |
| SDR-2-CON-IR-ZA-2980 | Repair of Solar Power System Installation | 2027-06-29 → 2027-06-30 (+1d) | 2027-07-03 → 2027-07-04 (+1d) | 2.7d → 1.7d |
| 1 | **Landscape Works** | 2027-05-04 → 2027-05-05 (+1d) | 2027-07-03 → 2027-07-04 (+1d) |  |
| 1 | **GROUND COVER** | 2027-05-04 → 2027-05-05 (+1d) | 2027-06-12 → 2027-06-13 (+1d) |  |
| SDR-2-CON-LS-ZG-1000 | Clearing & grubbing of landscape areas | 2027-05-04 → 2027-05-05 (+1d) | 2027-05-27 → 2027-05-29 (+2d) | 2.7d → 1.7d |
| SDR-2-CON-LS-ZG-1010 | Grass laying | 2027-05-27 → 2027-05-29 (+2d) | 2027-06-12 → 2027-06-13 (+1d) | 2.7d → 1.7d |
| 2 | **Trees** | 2027-06-12 → 2027-06-13 (+1d) | 2027-07-03 → 2027-07-04 (+1d) |  |
| SDR-2-CON-LS-ZG-1020 | Albizia lebbeck tress planting. | 2027-06-12 → 2027-06-13 (+1d) | 2027-07-03 → 2027-07-04 (+1d) | 2.7d → 1.7d |
| SDR-2-CON-LS-ZG-1030 | Tabopia tress planting. | 2027-06-12 → 2027-06-13 (+1d) | 2027-07-03 → 2027-07-04 (+1d) | 2.7d → 1.7d |
| SDR-2-CON-LS-ZG-1040 | Plumeria alba tress planting. | 2027-06-12 → 2027-06-13 (+1d) | 2027-07-03 → 2027-07-04 (+1d) | 2.7d → 1.7d |
| SDR-2-CON-LS-ZG-1050 | Cassia glauca tress planting. | 2027-06-12 → 2027-06-13 (+1d) | 2027-07-03 → 2027-07-04 (+1d) | 2.7d → 1.7d |
| 3 | **Miscellaneous landscaping items** | 2027-06-12 → 2027-06-13 (+1d) | 2027-07-03 → 2027-07-04 (+1d) |  |
| SDR-2-CON-LS-ZG-1060 | Gravel/Stone mulch: 75mm thick Hard, durable stone, washed free of loam, sand, clay, | 2027-06-12 → 2027-06-13 (+1d) | 2027-07-03 → 2027-07-04 (+1d) | 2.7d → 1.7d |
| CC | **CCTV Works** |  | 2027-04-06 → 2027-04-13 (+7d) |  |
| ZA | **ZONE A** |  | 2027-04-06 → 2027-04-13 (+7d) |  |
| 1 | **Poles 1st and 2nd Fix Works** |  | 2026-12-19 → 2026-12-26 (+7d) |  |
| 1 | **Excavation** |  | 2026-12-01 → 2026-12-08 (+7d) |  |
| SDR-2-CON-CC-ZA-1000 | Excavation 1Sst & 2nd Fix Works |  | 2026-12-01 → 2026-12-08 (+7d) | 2d → 17d |
| 2 | **Install Footings** |  | 2026-12-01 → 2026-12-08 (+7d) |  |
| SDR-2-CON-CC-ZA-1030 | Install Footings |  | 2026-12-01 → 2026-12-08 (+7d) | 2d → 17d |
| 3 | **Backfilling** | 2026-12-02 → 2026-12-09 (+7d) | 2026-12-09 → 2026-12-16 (+7d) |  |
| SDR-2-CON-CC-ZA-1050 | Backfilling 1Sst & 2nd Fix Works | 2026-12-02 → 2026-12-09 (+7d) | 2026-12-09 → 2026-12-16 (+7d) | 2d → 17d |
| 4 | **Install pole** | 2026-12-10 → 2026-12-17 (+7d) | 2026-12-19 → 2026-12-26 (+7d) |  |
| SDR-2-CON-CC-ZA-1060 | Install Pole | 2026-12-10 → 2026-12-17 (+7d) | 2026-12-19 → 2026-12-26 (+7d) | 2d → 17d |
| 2 | **25m Pole Package** |  | 2027-04-06 → 2027-04-13 (+7d) |  |
| 1 | **Excavation** |  | 2026-12-19 → 2026-12-26 (+7d) |  |
| SDR-2-CON-CC-ZA-1080 | 25 Meters Pole Excavation |  | 2026-12-19 → 2026-12-26 (+7d) | 2d → 17d |
| 2 | **Install Footings** |  | 2026-12-19 → 2026-12-26 (+7d) |  |
| SDR-2-CON-CC-ZA-1090 | 25 Meters pole installation Footings |  | 2026-12-19 → 2026-12-26 (+7d) | 52d → 46d |
| 3 | **Backfilling** | 2027-02-11 → 2027-02-18 (+7d) | 2027-03-08 → 2027-03-20 (+12d) |  |
| SDR-2-CON-CC-ZA-1100 | 25 Meters pole Backfilling | 2027-02-11 → 2027-02-18 (+7d) | 2027-03-08 → 2027-03-20 (+12d) | 14d → 8d |
| 4 | **Install pole** | 2027-03-14 → 2027-03-21 (+7d) | 2027-04-06 → 2027-04-13 (+7d) |  |
| SDR-2-CON-CC-ZA-1110 | 25 Meters pole installation | 2027-03-14 → 2027-03-21 (+7d) | 2027-04-06 → 2027-04-13 (+7d) | 14d → 8d |
| 3 | **7m Pole Package** |  | 2027-02-15 → 2027-02-23 (+8d) |  |
| 1 | **Excavation** |  | 2026-12-19 → 2026-12-26 (+7d) |  |
| SDR-2-CON-CC-ZA-1240 | 7m Meters Pole Excavation |  | 2026-12-19 → 2026-12-26 (+7d) | 2d → 17d |
| 2 | **Install Footings** |  | 2026-12-19 → 2026-12-26 (+7d) |  |
| SDR-2-CON-CC-ZA-1250 | 7m Meters pole installation Footings |  | 2026-12-19 → 2026-12-26 (+7d) | 52d → 46d |
| 3 | **Backfilling** | 2026-12-28 → 2027-01-04 (+7d) | 2027-01-20 → 2027-01-27 (+7d) |  |
| SDR-2-CON-CC-ZA-1260 | 7m Meters pole Backfilling | 2026-12-28 → 2027-01-04 (+7d) | 2027-01-20 → 2027-01-27 (+7d) | 52d → 46d |
| 4 | **Install pole** | 2027-01-23 → 2027-01-30 (+7d) | 2027-02-15 → 2027-02-23 (+8d) |  |
| SDR-2-CON-CC-ZA-1270 | 7 Meters pole Installation | 2027-01-23 → 2027-01-30 (+7d) | 2027-02-15 → 2027-02-23 (+8d) | 52d → 46d |
| 4 | **35m Pole Package** |  | 2027-04-06 → 2027-04-13 (+7d) |  |
| 1 | **Excavation** |  | 2026-12-19 → 2026-12-26 (+7d) |  |
| SDR-2-CON-CC-ZA-1380 | 35m Meters Pole Excavation |  | 2026-12-19 → 2026-12-26 (+7d) | 2d → 17d |
| 2 | **Install Footings** |  | 2026-12-20 → 2026-12-27 (+7d) |  |
| SDR-2-CON-CC-ZA-1390 | 35m Meters pole installation Footings |  | 2026-12-20 → 2026-12-27 (+7d) | 65d → 59d |
| 3 | **Backfilling** | 2027-02-17 → 2027-02-25 (+8d) | 2027-03-14 → 2027-03-21 (+7d) |  |
| SDR-2-CON-CC-ZA-1400 | 35m Meters pole Backfilling | 2027-02-17 → 2027-02-25 (+8d) | 2027-03-14 → 2027-03-21 (+7d) | 14d → 8d |
| 4 | **Install pole** | 2027-03-15 → 2027-03-22 (+7d) | 2027-04-06 → 2027-04-13 (+7d) |  |
| SDR-2-CON-CC-ZA-1410 | 35 Meters pole Installation | 2027-03-15 → 2027-03-22 (+7d) | 2027-04-06 → 2027-04-13 (+7d) | 14d → 8d |
| 5 | **Control Room** | 2027-01-06 → 2027-01-13 (+7d) | 2027-01-28 → 2027-02-04 (+7d) |  |
| SDR-2-CON-CC-ZA-1500 | Existing Control Room Preparation to accomodate the new equipment | 2027-01-06 → 2027-01-13 (+7d) | 2027-01-12 → 2027-01-19 (+7d) | 2d → 17d |
| SDR-2-CON-CC-ZA-1510 | VMS Server | 2027-01-06 → 2027-01-13 (+7d) | 2027-01-10 → 2027-01-17 (+7d) | 2d → 17d |
| SDR-2-CON-CC-ZA-1520 | Surveillance-optimized server for recording CCTV support simultaneous cameras stream and recording at high resolution | 2027-01-07 → 2027-01-14 (+7d) | 2027-01-11 → 2027-01-18 (+7d) | 2d → 17d |
| SDR-2-CON-CC-ZA-1530 | Video analytic computing hardware | 2027-01-09 → 2027-01-16 (+7d) | 2027-01-12 → 2027-01-19 (+7d) | 2d → 17d |
| SDR-2-CON-CC-ZA-1540 | Workstation | 2027-01-10 → 2027-01-17 (+7d) | 2027-01-18 → 2027-01-25 (+7d) | 2d → 17d |
| SDR-2-CON-CC-ZA-1550 | Professional LED screen 32 inch for workstations | 2027-01-11 → 2027-01-18 (+7d) | 2027-01-14 → 2027-01-21 (+7d) | 2d → 17d |
| SDR-2-CON-CC-ZA-1560 | Professional 55" video wall cube | 2027-01-13 → 2027-01-20 (+7d) | 2027-01-17 → 2027-01-24 (+7d) | 2d → 17d |
| SDR-2-CON-CC-ZA-1570 | Industrial Rack-Mount Managed Modular Gigabit Ethernet PoE Switch (24-Port) for outdoor application | 2027-01-19 → 2027-01-26 (+7d) | 2027-01-27 → 2027-02-03 (+7d) | 2d → 17d |
| SDR-2-CON-CC-ZA-1580 | SFP 1000Base-X SM | 2027-01-19 → 2027-01-26 (+7d) | 2027-01-26 → 2027-02-02 (+7d) | 2d → 17d |
| SDR-2-CON-CC-ZA-1590 | Professional joystick for accurate control of PTZ and PT Thermal Cameras. | 2027-01-20 → 2027-01-27 (+7d) | 2027-01-24 → 2027-01-31 (+7d) | 2d → 17d |
| SDR-2-CON-CC-ZA-1600 | Fiber patch panel including all related accessories | 2027-01-21 → 2027-01-28 (+7d) | 2027-01-28 → 2027-02-04 (+7d) | 22d → 17d |

| ID | Task | Start | Finish | Total float |
| --- | --- | --- | --- | --- |
| SDR-2-CON-CC-ZA-1610 | UPS 5000VA to power for all servers, monitor, and switch in the cabinet | 2027-01-21 → 2027-01-28 (+7d) | 2027-01-25 → 2027-02-01 (+7d) | 22d → 17d |
| SDR-2-CON-CC-ZA-1620 | Outdoor Carrier Class Shielded Ethernet Cable for P-to-P access points 305 meter | 2027-01-21 → 2027-01-28 (+7d) | 2027-01-28 → 2027-02-04 (+7d) | 44d → 39d |
| 6 | **Licenses,Documentation,Testing and Training** | 2027-01-25 → 2027-02-01 (+7d) | 2027-01-31 → 2027-02-07 (+7d) |  |
| SDR-2-CON-CC-ZA-1630 | VMS Lifetime Licenses | 2027-01-25 → 2027-02-01 (+7d) | 2027-01-31 → 2027-02-07 (+7d) | 2d → 61d |
| SDR-2-CON-CC-ZA-1640 | Camera-Interlink License | 2027-01-25 → 2027-02-01 (+7d) | 2027-01-31 → 2027-02-07 (+7d) | 2d → 61d |
| SDR-2-CON-CC-ZA-1650 | Video analytics license package | 2027-01-25 → 2027-02-01 (+7d) | 2027-01-28 → 2027-02-04 (+7d) | 2d → 61d |
| SDR-2-CON-CC-ZA-1660 | Video analytics license for ANPR | 2027-01-25 → 2027-02-01 (+7d) | 2027-01-28 → 2027-02-04 (+7d) | 2d → 61d |
| ZG | **ZONE G** |  | 2027-04-06 → 2027-04-13 (+7d) |  |
| 1 | **Poles 1st and 2nd Fix Works** |  | 2026-10-15 → 2026-10-22 (+7d) |  |
| 1 | **Excavation** |  | 2026-09-28 → 2026-10-05 (+7d) |  |
| SDR-2-CON-CC-ZA-1670 | Excavation 1Sst & 2nd Fix Works |  | 2026-09-28 → 2026-10-05 (+7d) | 20d → 25d |
| 2 | **Install Footings** |  | 2026-09-28 → 2026-10-05 (+7d) |  |
| SDR-2-CON-CC-ZA-1700 | Install Footings |  | 2026-09-28 → 2026-10-05 (+7d) | 20d → 25d |
| 3 | **Backfilling** | 2026-09-29 → 2026-10-06 (+7d) | 2026-10-06 → 2026-10-13 (+7d) |  |
| SDR-2-CON-CC-ZA-1720 | Backfilling 1Sst & 2nd Fix Works | 2026-09-29 → 2026-10-06 (+7d) | 2026-10-06 → 2026-10-13 (+7d) | 20d → 25d |
| 4 | **Install pole** | 2026-10-07 → 2026-10-14 (+7d) | 2026-10-15 → 2026-10-22 (+7d) |  |
| SDR-2-CON-CC-ZA-1730 | Install Pole | 2026-10-07 → 2026-10-14 (+7d) | 2026-10-15 → 2026-10-22 (+7d) | 20d → 25d |
| 2 | **25m Pole Package** |  | 2027-01-07 → 2027-01-14 (+7d) |  |
| 1 | **Excavation** |  | 2026-10-15 → 2026-10-22 (+7d) |  |
| SDR-2-CON-CC-ZA-1750 | 25 Meters Pole Excavation |  | 2026-10-15 → 2026-10-22 (+7d) | 20d → 25d |
| 2 | **Install Footings** | 2026-10-17 → 2026-10-24 (+7d) | 2026-11-09 → 2026-11-16 (+7d) |  |
| SDR-2-CON-CC-ZA-1760 | 25 Meters pole installation Footings | 2026-10-17 → 2026-10-24 (+7d) | 2026-11-09 → 2026-11-16 (+7d) | 20d → 25d |
| 3 | **Backfilling** | 2026-11-10 → 2026-11-17 (+7d) | 2026-12-02 → 2026-12-09 (+7d) |  |
| SDR-2-CON-CC-ZA-1770 | 25 Meters pole Backfilling | 2026-11-10 → 2026-11-17 (+7d) | 2026-12-02 → 2026-12-09 (+7d) | 20d → 25d |
| 4 | **Install pole** | 2026-12-15 → 2026-12-22 (+7d) | 2027-01-07 → 2027-01-14 (+7d) |  |
| SDR-2-CON-CC-ZA-1780 | 25 Meters pole installation | 2026-12-15 → 2026-12-22 (+7d) | 2027-01-07 → 2027-01-14 (+7d) | 20d → 25d |
| 3 | **7m Pole Package** |  | 2027-02-17 → 2027-02-25 (+8d) |  |
| 1 | **Excavation** |  | 2026-10-15 → 2026-10-22 (+7d) |  |
| SDR-2-CON-CC-ZA-1790 | 7m Meters Pole Excavation |  | 2026-10-15 → 2026-10-22 (+7d) | 25d → 29d |
| 2 | **Install Footings** | 2026-10-17 → 2026-10-24 (+7d) | 2026-11-08 → 2026-11-15 (+7d) |  |
| SDR-2-CON-CC-ZA-1800 | 7m Meters pole installation Footings | 2026-10-17 → 2026-10-24 (+7d) | 2026-11-08 → 2026-11-15 (+7d) | 62d → 57d |
| 3 | **Backfilling** | 2026-11-09 → 2026-11-16 (+7d) | 2026-12-01 → 2026-12-08 (+7d) |  |
| SDR-2-CON-CC-ZA-1810 | 7m Meters pole Backfilling | 2026-11-09 → 2026-11-16 (+7d) | 2026-12-01 → 2026-12-08 (+7d) | 62d → 57d |
| 4 | **Install pole** | 2027-01-25 → 2027-02-01 (+7d) | 2027-02-17 → 2027-02-25 (+8d) |  |
| SDR-2-CON-CC-ZA-1820 | 7 Meters pole Installation | 2027-01-25 → 2027-02-01 (+7d) | 2027-02-17 → 2027-02-25 (+8d) | 27d → 22d |
| 4 | **35m Pole Package** |  | 2026-12-14 → 2026-12-21 (+7d) |  |
| 1 | **Excavation** |  | 2026-10-15 → 2026-10-22 (+7d) |  |
| SDR-2-CON-CC-ZA-1830 | 35m Meters Pole Excavation |  | 2026-10-15 → 2026-10-22 (+7d) | 51d → 46d |
| 2 | **Install Footings** | 2026-10-17 → 2026-10-24 (+7d) | 2026-11-08 → 2026-11-15 (+7d) |  |
| SDR-2-CON-CC-ZA-1840 | 35m Meters pole installation Footings | 2026-10-17 → 2026-10-24 (+7d) | 2026-11-08 → 2026-11-15 (+7d) | 51d → 46d |
| 3 | **Backfilling** | 2026-10-20 → 2026-10-27 (+7d) | 2026-11-11 → 2026-11-18 (+7d) |  |
| SDR-2-CON-CC-ZA-1850 | 35m Meters pole Backfilling | 2026-10-20 → 2026-10-27 (+7d) | 2026-11-11 → 2026-11-18 (+7d) | 51d → 46d |
| 4 | **Install pole** | 2026-11-23 → 2026-11-30 (+7d) | 2026-12-14 → 2026-12-21 (+7d) |  |
| SDR-2-CON-CC-ZA-1860 | 35 Meters pole Installation | 2026-11-23 → 2026-11-30 (+7d) | 2026-12-14 → 2026-12-21 (+7d) | 51d → 46d |
| 5 | **Control Room** | 2026-10-17 → 2026-10-24 (+7d) | 2026-12-14 → 2026-12-21 (+7d) |  |
| SDR-2-CON-CC-ZG-1500 | Existing Control Room Preparation to accomodate the new equipments | 2026-10-17 → 2026-10-24 (+7d) | 2026-10-20 → 2026-10-27 (+7d) | 26d → 30d |
| SDR-2-CON-CC-ZG-1540 | Workstation | 2026-10-17 → 2026-10-24 (+7d) | 2026-10-29 → 2026-11-05 (+7d) | 25d → 29d |
| SDR-2-CON-CC-ZG-1550 | Professional LED screen 32 inch for workstations | 2026-10-17 → 2026-10-24 (+7d) | 2026-10-20 → 2026-10-27 (+7d) | 25d → 29d |
| SDR-2-CON-CC-ZG-1510 | VMS Server | 2026-10-21 → 2026-10-28 (+7d) | 2026-10-26 → 2026-11-02 (+7d) | 26d → 30d |
| SDR-2-CON-CC-ZG-1560 | Professional 55" video wall cube | 2026-10-21 → 2026-10-28 (+7d) | 2026-10-25 → 2026-11-01 (+7d) | 25d → 29d |
| SDR-2-CON-CC-ZG-1570 | Industrial Rack-Mount Managed Modular Gigabit Ethernet PoE Switch (24-Port) for outdoor application | 2026-10-24 → 2026-10-31 (+7d) | 2026-11-02 → 2026-11-09 (+7d) | 25d → 29d |
| SDR-2-CON-CC-ZG-1580 | SFP 1000Base-X SM | 2026-10-24 → 2026-10-31 (+7d) | 2026-10-27 → 2026-11-03 (+7d) | 25d → 29d |
| SDR-2-CON-CC-ZG-1520 | Surveillance-optimized server for recording CCTV support simultaneous cameras stream and recording at high resolution | 2026-10-27 → 2026-11-03 (+7d) | 2026-10-31 → 2026-11-07 (+7d) | 26d → 30d |
| SDR-2-CON-CC-ZG-1590 | Professional joystick for accurate control of PTZ and PT Thermal Cameras. | 2026-10-28 → 2026-11-04 (+7d) | 2026-11-01 → 2026-11-08 (+7d) | 25d → 29d |
| SDR-2-CON-CC-ZG-1530 | Video analytic computing hardware | 2026-11-01 → 2026-11-08 (+7d) | 2026-11-04 → 2026-11-11 (+7d) | 33d → 32d |
| SDR-2-CON-CC-ZG-1600 | Fiber patch panel including all related accessories | 2026-11-02 → 2026-11-09 (+7d) | 2026-11-05 → 2026-11-12 (+7d) | 25d → 29d |
| SDR-2-CON-CC-ZG-1610 | UPS 5000VA to power for all servers, monitor, and switch in the cabinet | 2026-11-08 → 2026-11-15 (+7d) | 2026-11-14 → 2026-11-21 (+7d) | 25d → 29d |
| SDR-2-CON-CC-ZG-1620 | Outdoor Carrier Class Shielded Ethernet Cable for P-to-P access points 305 meter | 2026-12-10 → 2026-12-17 (+7d) | 2026-12-14 → 2026-12-21 (+7d) | 51d → 46d |
| 6 | **Licenses,Documentation,Testing and Training** | 2026-11-05 → 2026-11-12 (+7d) | 2027-04-06 → 2027-04-13 (+7d) |  |
| SDR-2-CON-CC-ZG-1630 | VMS Lifetime Licenses | 2026-11-05 → 2026-11-12 (+7d) | 2026-11-07 → 2026-11-14 (+7d) | 33d → 32d |
| SDR-2-CON-CC-ZG-1640 | Camera-Interlink License | 2026-11-08 → 2026-11-15 (+7d) | 2026-11-08 → 2026-11-15 (+7d) | 33d → 32d |
| SDR-2-CON-CC-ZG-1650 | Video analytics license package | 2026-11-08 → 2026-11-15 (+7d) | 2026-11-08 → 2026-11-15 (+7d) | 33d → 32d |
| SDR-2-CON-CC-ZG-1660 | Video analytics license for ANPR | 2027-04-06 → 2027-04-13 (+7d) | 2027-04-06 → 2027-04-13 (+7d) | 14d → 8d |
| TC | **Testing & Commissioning** | 2027-01-21 → 2027-01-28 (+7d) | 2027-05-27 → 2027-06-03 (+7d) |  |
| 1 | **Civil Works** | 2027-04-10 → 2027-04-17 (+7d) | 2027-04-13 → 2027-04-20 (+7d) |  |
| SDR-2-TC-CW-1010 | Testing & Commissioning of road works | 2027-04-10 → 2027-04-17 (+7d) | 2027-04-13 → 2027-04-20 (+7d) | 21d → 15d |
| 2 | **Storm Water Drainage Network** | 2027-02-24 → 2027-03-03 (+7d) | 2027-03-15 → 2027-03-22 (+7d) |  |
| SDR-2-TC-SWDN-1020 | Testing & Commissioning of network work | 2027-02-24 → 2027-03-03 (+7d) | 2027-03-15 → 2027-03-22 (+7d) | 73.1d → 67.1d |
| 3 | **Sewerage Network** | 2027-04-24 → 2027-05-01 (+7d) | 2027-05-06 → 2027-05-13 (+7d) |  |
| SDR-2-TC-SN-1030 | Testing & Commissioning of Sewage Network | 2027-04-24 → 2027-05-01 (+7d) | 2027-05-06 → 2027-05-13 (+7d) | 19d → 13d |

| ID | Task | Start | Finish | Total float |
| --- | --- | --- | --- | --- |
| 4 | **TSE Network** | 2027-05-08 → 2027-05-15 (+7d) | 2027-05-27 → 2027-06-03 (+7d) |  |
| SDR-2-TC-TSE-1040 | Testing & Commissioning of TSE Network | 2027-05-08 → 2027-05-15 (+7d) | 2027-05-27 → 2027-06-03 (+7d) | 19d → 13d |
| 5 | **Portable Water** | 2027-05-06 → 2027-05-22 (+16d) | 2027-05-23 → 2027-05-31 (+8d) |  |
| SDR-2-TC-PW-1050 | Testing & Commissioning of Potable Network | 2027-05-06 → 2027-05-22 (+16d) | 2027-05-23 → 2027-05-31 (+8d) | 19.81d → 12d |
| 6 | **Electrical Works** | 2027-04-07 → 2027-04-14 (+7d) | 2027-04-14 → 2027-04-21 (+7d) |  |
| SDR-2-TC-EW-1060 | Testing & Commissioning of Electrical Network | 2027-04-07 → 2027-04-14 (+7d) | 2027-04-14 → 2027-04-21 (+7d) | 19d → 13d |
| 7 | **Landscape & Irrigation Works** | 2027-05-08 → 2027-05-22 (+14d) | 2027-05-13 → 2027-05-27 (+14d) |  |
| SDR-2-TC-LIW-1070 | Testing & Commissioning of Landscape & Irrigation Network | 2027-05-08 → 2027-05-22 (+14d) | 2027-05-13 → 2027-05-27 (+14d) | 40d → 33d |
| 8 | **CCTV Works** | 2027-01-21 → 2027-01-28 (+7d) | 2027-02-01 → 2027-02-08 (+7d) |  |
| SDR-2-TC-CCTV-1080 | Testing & Commissioning of medium voltage works | 2027-01-21 → 2027-01-28 (+7d) | 2027-02-01 → 2027-02-08 (+7d) | 22d → 17d |
| CO | **Close Out** | 2027-04-07 → 2027-04-14 (+7d) | 2027-07-05 → 2027-07-04 (-1d) |  |
| 1 | **As Built Drawings** | 2027-04-07 → 2027-04-14 (+7d) | 2027-06-03 → 2027-06-09 (+6d) |  |
| 1 | **Civil** | 2027-04-07 → 2027-04-14 (+7d) | 2027-04-20 → 2027-04-27 (+7d) |  |
| SDR-2-CLO-AS-C-1000 | Civil As-Built Drawing Submission | 2027-04-07 → 2027-04-14 (+7d) | 2027-04-14 → 2027-04-21 (+7d) | 14d → 8d |
| SDR-2-CLO-AS-C-1010 | Civil As-Built Drawing Approvals | 2027-04-15 → 2027-04-22 (+7d) | 2027-04-20 → 2027-04-27 (+7d) | 14d → 8d |
| 2 | **Mechanical** | 2027-05-11 → 2027-05-23 (+12d) | 2027-06-03 → 2027-06-09 (+6d) |  |
| SDR-2-CLO-AS-M-1000 | Mechanical As-Built Drawing Submission | 2027-05-11 → 2027-05-23 (+12d) | 2027-05-25 → 2027-05-31 (+6d) | 13d → 8d |
| SDR-2-CLO-AS-M-1010 | Mechanical As-Built Drawing Approvals | 2027-05-26 → 2027-06-01 (+6d) | 2027-06-03 → 2027-06-09 (+6d) | 13d → 8d |
| 3 | **Electrical** | 2027-04-07 → 2027-04-14 (+7d) | 2027-04-22 → 2027-04-29 (+7d) |  |
| SDR-2-CLO-AS-E-1000 | Electrical As-Built Drawing Submission | 2027-04-07 → 2027-04-14 (+7d) | 2027-04-14 → 2027-04-21 (+7d) | 19d → 13d |
| SDR-2-CLO-AS-E-1010 | Electrical As-Built Drawing Approvals | 2027-04-15 → 2027-04-22 (+7d) | 2027-04-22 → 2027-04-29 (+7d) | 19d → 13d |
| 2 | **Training and Manuals** | 2027-06-08 → 2027-06-10 (+2d) | 2027-06-23 → 2027-06-26 (+3d) |  |
| SDR-2-CLO-TM-1000 | Training and Manuals | 2027-06-08 → 2027-06-10 (+2d) | 2027-06-23 → 2027-06-26 (+3d) | 10d → 8d |
| 3 | **Demobilize Manpower** | 2027-06-08 → 2027-06-10 (+2d) | 2027-06-23 → 2027-06-26 (+3d) |  |
| SDR-2-CLO-DM-1000 | Manpower Demobilize | 2027-06-08 → 2027-06-10 (+2d) | 2027-06-23 → 2027-06-26 (+3d) | 10d → 8d |
| 4 | **Demobilize Equipment** | 2027-06-08 → 2027-06-10 (+2d) | 2027-06-23 → 2027-06-26 (+3d) |  |
| SDR-2-CLO-DE-1000 | Equipments Demobilize | 2027-06-08 → 2027-06-10 (+2d) | 2027-06-23 → 2027-06-26 (+3d) | 10d → 8d |
| 5 | **Removal of Site Offices and Structures** | 2027-06-08 → 2027-06-10 (+2d) | 2027-06-23 → 2027-06-26 (+3d) |  |
| SDR-2-CLO-RO-1000 | Site Office Removal | 2027-06-08 → 2027-06-10 (+2d) | 2027-06-23 → 2027-06-26 (+3d) | 10d → 8d |
| 6 | **Handover** | 2027-06-30 → 2027-06-28 (-2d) | 2027-07-05 → 2027-07-04 (-1d) |  |
| SDR-2-CLO-HO-1000 | Project Handover | 2027-06-30 → 2027-06-28 (-2d) | 2027-07-05 → 2027-07-04 (-1d) | 0d → 1.7d |
