# DEVELOPMENT OF SUDAIR INDUSTRIAL CITY PHASE 2 - Update 05/10/2026.

How a schedule from Primavera P6 changed from version to version. A marks actual dates.

## Version 3 (data date 2026-10-05, saved 2026-10-05, file Sudair 2 P2 05.10.26 INFRA.xer)

| ID | WBS | Task | Duration | Start | Finish | Predecessors | Complete | Total float |
| --- | --- | --- | --- | --- | --- | --- | --- | --- |
|  | M | **Milestones** |  | 2026-01-06 | 2027-07-05 |  |  |  |
|  | 1 | **Major Milestone** |  | 2026-01-06 | 2027-07-05 |  |  |  |
| SDR-2-MILS-1000 |  | Project Start Milstone | 0d | 2026-01-06 A | 2026-01-06 A |  | 100% |  |
| SDR-2-MILS-1010 |  | Project Finish Milstone | 0d | 2027-07-05 | 2027-07-05 | SDR-2-CLO-AS-M-1010, SDR-2-CON-IR-ZA-2190, SDR-2-CON-IR-ZA-2510, SDR-2-CON-IR-ZA-2550, SDR-2-CON-LS-ZA-1020, SDR-2-CON-LS-ZA-1030, SDR-2-CON-LS-ZA-1040, SDR-2-CON-LS-ZA-1050, SDR-2-CON-LS-ZA-1060, SDR-2-CON-LS-ZG-1020, SDR-2-CON-LS-ZG-1030, SDR-2-CON-LS-ZG-1040, SDR-2-CON-LS-ZG-1050, SDR-2-CON-LS-ZG-1060, SDR-2-TC-SWDN-1020, SDR-2-TC-TSE-1040, SDR-2-TC-PW-1050, SDR-2-TC-EW-1060, SDR-2-CLO-TM-1000, SDR-2-CLO-DM-1000, SDR-2-CLO-DE-1000, SDR-2-CLO-RO-1000, SDR-2-CLO-HO-1000, SDR-2-MILS-1080 FF, SDR-2-MILS-1110 FF, SDR-2-CON-IR-ZA-2310 FF, SDR-2-CON-IR-ZA-2940 FF, SDR-2-CON-IR-ZA-2980 FF, SDR-2-MILS-1060 FF, SDR-2-MILS-1070 FF, SDR-2-CLO-AS-C-1010, SDR-2-CON-CC-ZA-1410, SDR-2-CON-CC-ZA-1110 |  | 0d |
|  | 3 | **Contractual Milestone** |  | 2026-04-06 | 2027-06-29 |  |  |  |
| SDR-2-MILS-1020 |  | Mobilization Finish Milestone | 0d | 2026-04-06 A | 2026-04-06 A | SDR-2-MOBL-1060 | 100% |  |
| SDR-2-MILS-1030 |  | Execution Plan and Baseline Submission Finish Milestone | 0d | 2026-04-06 A | 2026-04-06 A | SDR-2-PREL-1110 | 100% |  |
| SDR-2-MILS-1040 |  | Submission and approval of plans and materials Finish Milestone | 0d | 2026-07-25 A | 2026-07-25 A | SDR-2-PRO-MAL-E-1160, SDR-2-PRO-MAL-E-1200 FF, SDR-2-PRO-MSL-E-1170 FF, SDR-2-PRO-MAL-E-1170 FF | 100% |  |
| SDR-2-MILS-1060 |  | Completion of medium voltage works | 0d | 2027-02-04 | 2027-02-04 | SDR-2-CON-CC-ZA-1860, SDR-2-CON-CC-ZA-1620 FF |  | 39d |
| SDR-2-MILS-1050 |  | Completion of road works | 0d | 2027-04-03 | 2027-04-03 | SDR-2-CON-RW-ZA-1710, SDR-2-CON-RW-ZA-2410 FF, SDR-2-CON-RW-ZG-1160 FF |  | 30d |
| SDR-2-MILS-1070 |  | Completion of All Network work | 0d | 2027-04-28 | 2027-04-28 | SDR-2-CON-ST-ZA-4170, SDR-2-CON-ST-ZA-5670, SDR-2-CON-ST-ZA-4020 |  | 53d |
| SDR-2-MILS-1080 |  | Completion of finishing works in the project | 0d | 2027-06-29 | 2027-06-29 | SDR-2-CON-IR-ZA-2310, SDR-2-CON-IR-ZA-2800 |  | 5.7d |
|  | 2 | **Phases Milestone** |  | 2026-10-05 | 2027-07-05 |  |  |  |
| SDR-2-MILS-1090 |  | Engineering Phase Finish Milestone | 0d | 2026-10-05 | 2026-10-05 | SDR-2-ENG-APP-M-1290 |  | 71d |
| SDR-2-MILS-1100 |  | Procurment Phase Finish Milestone | 0d | 2026-11-11 | 2026-11-11 | SDR-2-PRO-ST-E-1240 |  | 66.1d |
| SDR-2-MILS-1110 |  | Construction Phase Finish Milestone | 0d | 2027-07-05 | 2027-07-05 | SDR-2-CON-IR-ZA-2670 FF, SDR-2-CLO-HO-1000 FF, SDR-2-CLO-HO-1000 |  | 0d |
|  | MB | **Mobilization** |  | 2026-01-06 | 2026-04-06 |  |  |  |
|  | 6 | **Office Site Prepare** |  | 2026-01-06 | 2026-01-10 |  |  |  |
| SDR-2-MOBL-1000 |  | Office Area Grading and Prepare | 4d | 2026-01-06 A | 2026-01-10 A | SDR-2-MILS-1000 | 100% |  |
|  | 3 | **Access Roads** |  | 2026-01-11 | 2026-01-14 |  |  |  |
| SDR-2-MOBL-1010 |  | Office Area Access Roads Prepare | 4d | 2026-01-11 A | 2026-01-14 A | SDR-2-MOBL-1000 | 100% |  |
|  | 5 | **Offices Installation** |  | 2026-01-15 | 2026-01-20 |  |  |  |
| SDR-2-MOBL-1020 |  | Offices Cabins Installation | 5d | 2026-01-15 A | 2026-01-20 A | SDR-2-MOBL-1010 | 100% |  |
|  | 10 | **Offices MEP Works** |  | 2026-01-15 | 2026-01-20 |  |  |  |
| SDR-2-MOBL-1030 |  | Office Cabins MEP Works | 5d | 2026-01-15 A | 2026-01-20 A | SDR-2-MOBL-1020 | 100% |  |
|  | 4 | **Manpower Mobilization** |  | 2026-01-21 | 2026-01-25 |  |  |  |
| SDR-2-MOBL-1040 |  | Manpower Arrive | 4d | 2026-01-21 A | 2026-01-25 A | SDR-2-MOBL-1030 SS | 100% |  |
|  | 7 | **Equipment Mobilization** |  | 2026-01-26 | 2026-01-31 |  |  |  |
| SDR-2-MOBL-1050 |  | Equipment Arrive | 5d | 2026-01-26 A | 2026-01-31 A | SDR-2-MOBL-1040 | 100% |  |
|  | 1 | **Project Signage** |  | 2026-02-01 | 2026-02-05 |  |  |  |
| SDR-2-MOBL-1060 |  | Project Sign Installation | 5d | 2026-02-01 A | 2026-02-05 A | SDR-2-MOBL-1050 | 100% |  |
|  | 2 | **Preliminary Submittals** |  | 2026-01-22 | 2026-04-06 |  |  |  |
|  | 1 | **HSSE Plan** |  | 2026-01-22 | 2026-02-28 |  |  |  |
| SDR-2-PREL-1000 |  | Project HSSE Plan Submission | 3d | 2026-01-22 A | 2026-01-26 A | SDR-2-MOBL-1030, SDR-2-MOBL-1050 | 100% |  |
| SDR-2-PREL-1010 |  | Project HSSE Plan Approval | 2d | 2026-01-27 A | 2026-02-28 A | SDR-2-PREL-1000 | 100% |  |
|  | 2 | **Quality Control Plan** |  | 2026-02-01 | 2026-03-05 |  |  |  |
| SDR-2-PREL-1020 |  | Project Quality Plan Submission | 3d | 2026-02-01 A | 2026-02-03 A | SDR-2-PREL-1000 SS | 100% |  |
| SDR-2-PREL-1030 |  | Project Quality Plan Approval | 2d | 2026-02-04 A | 2026-03-05 A | SDR-2-PREL-1020 | 100% |  |
|  | 3 | **Communications Plan** |  | 2026-01-29 | 2026-02-02 |  |  |  |
| SDR-2-PREL-1040 |  | Project Communication Plan Submission | 3d | 2026-01-29 A | 2026-02-01 A | SDR-2-PREL-1020 SS | 100% |  |
| SDR-2-PREL-1050 |  | Project Communication Plan Approval | 2d | 2026-02-01 A | 2026-02-02 A | SDR-2-PREL-1040 | 100% |  |
|  | 4 | **Risk Managment Plan** |  | 2026-01-28 | 2026-02-07 |  |  |  |
| SDR-2-PREL-1070 |  | Project Risk Managment Plan Approvals | 2d | 2026-01-28 A | 2026-02-02 A | SDR-2-PREL-1060 | 100% |  |
| SDR-2-PREL-1060 |  | Project Risk Managment Plan Submission | 3d | 2026-02-01 A | 2026-02-07 A | SDR-2-PREL-1040 SS | 100% |  |
|  | 5 | **Project Execution Plan** |  | 2026-02-01 | 2026-02-07 |  |  |  |
| SDR-2-PREL-1080 |  | Project Execution Plan Submission | 3d | 2026-02-01 A | 2026-02-07 A | SDR-2-PREL-1060 SS | 100% |  |
| SDR-2-PREL-1090 |  | Project Execution Plan Approvals | 2d | 2026-02-07 A | 2026-02-07 A | SDR-2-PREL-1080, SDR-2-MILS-1030 FF | 100% |  |
|  | 6 | **Project Schedule** |  | 2026-01-29 | 2026-04-06 |  |  |  |
| SDR-2-PREL-1100 |  | Project Schedule Submission | 3d | 2026-01-29 A | 2026-02-03 A | SDR-2-PREL-1000 SS | 100% |  |
| SDR-2-PREL-1110 |  | Project Schedule Approvals | 2d | 2026-02-04 A | 2026-04-06 A | SDR-2-PREL-1100 | 100% |  |
|  | EN | **Engineering** |  | 2026-02-08 | 2026-10-05 |  |  |  |
|  | 1 | **Shop Drawings Stage** |  | 2026-02-08 | 2026-10-05 |  |  |  |
|  | 1 | **Submission** |  | 2026-02-08 | 2026-06-15 |  |  |  |
|  | 4 | **Road Works** |  | 2026-02-08 | 2026-02-18 |  |  |  |
| SDR-2-ENG-SUB-C-1000 |  | DEMOLISH WORKS OVERALL PLAN Submission | 4d | 2026-02-08 A | 2026-02-10 A | SDR-2-MILS-1000 FS+28d, SDR-2-PREL-1010, SDR-2-PREL-1030, SDR-2-PREL-1050, SDR-2-PREL-1070, SDR-2-PREL-1090, SDR-2-MILS-1020 | 100% |  |
| SDR-2-ENG-SUB-C-1010 |  | ROAD ZONES LAYOUT PLAN Submission | 4d | 2026-02-11 A | 2026-02-12 A | SDR-2-MILS-1000 FS+28d | 100% |  |
| SDR-2-ENG-SUB-C-1020 |  | ROAD LAYOUT PLAN Submission | 4d | 2026-02-12 A | 2026-02-15 A | SDR-2-MILS-1000 FS+28d | 100% |  |
| SDR-2-ENG-SUB-C-1030 |  | TYPICAL ROAD CROSS SECTIONS Submission | 4d | 2026-02-12 A | 2026-02-12 A | SDR-2-MILS-1000 FS+28d | 100% |  |
| SDR-2-ENG-SUB-C-1040 |  | GRADING TYPICAL CROSS SECTIONS Submission | 4d | 2026-02-12 A | 2026-02-16 A | SDR-2-MILS-1000 FS+28d | 100% |  |
| SDR-2-ENG-SUB-C-1050 |  | ZONE A ROAD SETTING OUT PLAN Submission | 4d | 2026-02-12 A | 2026-02-16 A | SDR-2-MILS-1000 FS+28d | 100% |  |
| SDR-2-ENG-SUB-C-1060 |  | ZONE G ROAD SETTING OUT PLAN Submission | 4d | 2026-02-12 A | 2026-02-16 A | SDR-2-MILS-1000 FS+28d | 100% |  |
| SDR-2-ENG-SUB-C-1070 |  | TYPICAL PAVEMENT DETAILS Submission | 4d | 2026-02-16 A | 2026-02-17 A | SDR-2-MILS-1000 FS+28d | 100% |  |
| SDR-2-ENG-SUB-C-1080 |  | TYPICAL JUNCTION DETAIL LOCAL-1 & LOCAL-1 (40M ROW) Submission | 4d | 2026-02-16 A | 2026-02-17 A | SDR-2-MILS-1000 FS+28d | 100% |  |
| SDR-2-ENG-SUB-C-1100 |  | ROAD PROFILES (ZONE G) Submission | 4d | 2026-02-16 A | 2026-02-17 A | SDR-2-MILS-1000 FS+28d | 100% |  |
| SDR-2-ENG-SUB-C-1110 |  | Overall Kerbing and Pavement Layout Submission | 4d | 2026-02-16 A | 2026-02-17 A | SDR-2-MILS-1000 FS+28d | 100% |  |
| SDR-2-ENG-SUB-C-1090 |  | ROAD PROFILES (ZONE A) Submission | 4d | 2026-02-16 A | 2026-02-17 A | SDR-2-MILS-1000 FS+28d | 100% |  |
| SDR-2-ENG-SUB-C-1120 |  | Typical Concrete Kerb Details Submission | 4d | 2026-02-17 A | 2026-02-18 A | SDR-2-MILS-1000 FS+28d | 100% |  |
| SDR-2-ENG-SUB-C-1130 |  | Typical Pavement Details Submission | 4d | 2026-02-17 A | 2026-02-18 A | SDR-2-MILS-1000 FS+28d | 100% |  |
| SDR-2-ENG-SUB-C-1140 |  | Road Marking Layout Submission | 4d | 2026-02-17 A | 2026-02-18 A | SDR-2-MILS-1000 FS+28d | 100% |  |
| SDR-2-ENG-SUB-C-1150 |  | Road Marking Details Submission | 4d | 2026-02-17 A | 2026-02-18 A | SDR-2-MILS-1000 FS+28d | 100% |  |

| ID | WBS | Task | Duration | Start | Finish | Predecessors | Complete |
| --- | --- | --- | --- | --- | --- | --- | --- |
| SDR-2-ENG-SUB-C-1160 |  | Road Marking And Signage Typical Standard Details Submission | 4d | 2026-02-17 A | 2026-02-18 A | SDR-2-MILS-1000 FS+28d | 100% |
| SDR-2-ENG-SUB-C-1170 |  | Standard Details Submission | 4d | 2026-02-17 A | 2026-02-18 A | SDR-2-MILS-1000 FS+28d | 100% |
| SDR-2-ENG-SUB-C-1180 |  | Site Safety Notice Board Submission | 4d | 2026-02-17 A | 2026-02-18 A | SDR-2-MILS-1000 FS+28d | 100% |
| SDR-2-ENG-SUB-C-1190 |  | Location Plan For Traffic Signage Submission | 4d | 2026-02-17 A | 2026-02-18 A | SDR-2-MILS-1000 FS+28d | 100% |
|  | 5 | **Storm Water Drainage Network** |  | 2026-02-12 | 2026-02-25 |  |  |
| SDR-2-ENG-SUB-M-1000 |  | Storm Drainage Master Plan Submission | 4d | 2026-02-12 A | 2026-02-16 A | SDR-2-MILS-1000 FS+28d | 100% |
| SDR-2-ENG-SUB-M-1010 |  | Storm Drainage Layout Submission | 4d | 2026-02-12 A | 2026-02-16 A | SDR-2-MILS-1000 FS+28d | 100% |
| SDR-2-ENG-SUB-M-1020 |  | Storm Network Profile Submission | 4d | 2026-02-16 A | 2026-02-18 A | SDR-2-MILS-1000 FS+28d | 100% |
| SDR-2-ENG-SUB-M-1030 |  | Storm Network Standard Details Submission | 4d | 2026-02-18 A | 2026-02-25 A | SDR-2-MILS-1000 FS+28d | 100% |
| SDR-2-ENG-SUB-M-1040 |  | Storm Network Section Submission | 4d | 2026-02-18 A | 2026-02-25 A | SDR-2-MILS-1000 FS+28d | 100% |
| SDR-2-ENG-SUB-M-1050 |  | POND A LAYOUT AND PROFILE Submission | 4d | 2026-02-18 A | 2026-02-23 A | SDR-2-MILS-1000 FS+28d | 100% |
| SDR-2-ENG-SUB-M-1060 |  | TYPICAL ENERGY DISSAPATION DETAILS Submission | 4d | 2026-02-23 A | 2026-02-25 A | SDR-2-MILS-1000 FS+28d | 100% |
| SDR-2-ENG-SUB-M-1070 |  | STORM WATER POND SIPHON PIPE DETAILS Submission | 4d | 2026-02-23 A | 2026-02-25 A | SDR-2-MILS-1000 FS+28d | 100% |
| SDR-2-ENG-SUB-M-1080 |  | REINFORCEMENT CONCRETE WEIR AND GABION WALL DETAILS Submission | 4d | 2026-02-23 A | 2026-02-25 A | SDR-2-MILS-1000 FS+28d | 100% |
| SDR-2-ENG-SUB-M-1090 |  | TYPICAL TRENCH AND PIPE BEDDING DETAILS Submission | 4d | 2026-02-23 A | 2026-02-25 A | SDR-2-MILS-1000 FS+28d | 100% |
| SDR-2-ENG-SUB-M-1100 |  | FLUSH AND KERB INLET MANHOLE DETAILS Submission | 4d | 2026-02-23 A | 2026-02-25 A | SDR-2-MILS-1000 FS+28d | 100% |
| SDR-2-ENG-SUB-M-1110 |  | BOX PIPE CONNECTION AND BOX PIPE WIDENING DETAILS Submission | 4d | 2026-02-23 A | 2026-02-25 A | SDR-2-MILS-1000 FS+28d | 100% |
| SDR-2-ENG-SUB-M-1120 |  | TYPICAL BOX PIPE JUNCTION DETAILS Submission | 4d | 2026-02-23 A | 2026-02-25 A | SDR-2-MILS-1000 FS+28d | 100% |
| SDR-2-ENG-SUB-M-1130 |  | TYPICAL JUNCTION CHAMBER REINFORCEMENT DETAILS Submission | 4d | 2026-02-23 A | 2026-02-25 A | SDR-2-MILS-1000 FS+28d | 100% |
| SDR-2-ENG-SUB-M-1140 |  | DEPRESSED KERB TO SWALE/MANHOLE DETAILS Submission | 4d | 2026-02-23 A | 2026-02-25 A | SDR-2-MILS-1000 FS+28d | 100% |
| SDR-2-ENG-SUB-M-1150 |  | BOX PIPE AND SWALE CONNECTION DETAILS Submission | 4d | 2026-02-23 A | 2026-02-25 A | SDR-2-MILS-1000 FS+28d | 100% |
|  | 6 | **Sewerage Network** |  | 2026-02-18 | 2026-02-25 |  |  |
| SDR-2-ENG-SUB-M-1160 |  | Sewage Layout Master Plan Submission | 4d | 2026-02-18 A | 2026-02-23 A | SDR-2-MILS-1000 FS+28d | 100% |
| SDR-2-ENG-SUB-M-1170 |  | Sewage Network Profile Submission | 4d | 2026-02-18 A | 2026-02-23 A | SDR-2-MILS-1000 FS+28d | 100% |
| SDR-2-ENG-SUB-M-1180 |  | Sewage Network Standard Details Submission | 4d | 2026-02-18 A | 2026-02-25 A | SDR-2-MILS-1000 FS+28d | 100% |
| SDR-2-ENG-SUB-M-1190 |  | Sewage Network Section Submission | 4d | 2026-02-18 A | 2026-02-25 A | SDR-2-MILS-1000 FS+28d | 100% |
|  | 7 | **TSE Network** |  | 2026-02-18 | 2026-02-25 |  |  |
| SDR-2-ENG-SUB-M-1210 |  | TSE Network Profile Submission | 4d | 2026-02-18 A | 2026-02-23 A | SDR-2-MILS-1000 FS+28d | 100% |
| SDR-2-ENG-SUB-M-1220 |  | TSE Network Standard Details Submission | 4d | 2026-02-18 A | 2026-02-25 A | SDR-2-MILS-1000 FS+28d | 100% |
| SDR-2-ENG-SUB-M-1230 |  | TSE Network Section Submission | 4d | 2026-02-18 A | 2026-02-25 A | SDR-2-MILS-1000 FS+28d | 100% |
| SDR-2-ENG-SUB-M-1200 |  | TSE Layout Master Plan Submission | 4d | 2026-02-23 A | 2026-02-25 A | SDR-2-MILS-1000 FS+28d | 100% |
|  | 8 | **Portable Water** |  | 2026-02-18 | 2026-02-25 |  |  |
| SDR-2-ENG-SUB-M-1240 |  | Potable Water Piping Layout Master Plan Submission | 4d | 2026-02-18 A | 2026-02-23 A | SDR-2-MILS-1000 FS+28d | 100% |
| SDR-2-ENG-SUB-M-1250 |  | Potable Water Piping Layout Submission | 4d | 2026-02-18 A | 2026-02-23 A | SDR-2-MILS-1000 FS+28d | 100% |
| SDR-2-ENG-SUB-M-1260 |  | Potable Water Standard Details Submission | 4d | 2026-02-18 A | 2026-02-25 A | SDR-2-MILS-1000 FS+28d | 100% |
| SDR-2-ENG-SUB-M-1270 |  | Potable Water Section Submission | 4d | 2026-02-18 A | 2026-02-23 A | SDR-2-MILS-1000 FS+28d | 100% |
|  | 9 | **Electrical** |  | 2026-02-16 | 2026-06-15 |  |  |
| SDR-2-ENG-SUB-E-1000 |  | MV Network Layout Submission | 4d | 2026-02-16 A | 2026-06-15 A | SDR-2-MILS-1000 FS+28d | 100% |
| SDR-2-ENG-SUB-E-1080 |  | Street Lighting Layout Submission | 4d | 2026-02-16 A | 2026-02-17 A | SDR-2-MILS-1000 FS+28d | 100% |
| SDR-2-ENG-SUB-E-1090 |  | Single Line Diagram for Street Lighting Submission | 4d | 2026-02-16 A | 2026-02-17 A | SDR-2-MILS-1000 FS+28d | 100% |
| SDR-2-ENG-SUB-E-1170 |  | Telecom Overall Layout Submission | 4d | 2026-02-16 A | 2026-02-17 A | SDR-2-MILS-1000 FS+28d | 100% |
| SDR-2-ENG-SUB-E-1010 |  | MV Single Line Diagram Submission | 4d | 2026-02-17 A | 2026-06-15 A | SDR-2-MILS-1000 FS+28d | 100% |
| SDR-2-ENG-SUB-E-1100 |  | Voltage Drop Calculations Submission | 4d | 2026-02-17 A | 2026-02-18 A | SDR-2-MILS-1000 FS+28d | 100% |
| SDR-2-ENG-SUB-E-1180 |  | Typical Trenches Detail Submission | 4d | 2026-02-17 A | 2026-02-18 A | SDR-2-MILS-1000 FS+28d | 100% |
| SDR-2-ENG-SUB-E-1020 |  | Design Of MV Loops Submission | 4d | 2026-02-18 A | 2026-06-15 A | SDR-2-MILS-1000 FS+28d | 100% |
| SDR-2-ENG-SUB-E-1030 |  | Loads For Plots Submission | 4d | 2026-02-18 A | 2026-06-15 A | SDR-2-MILS-1000 FS+28d | 100% |
| SDR-2-ENG-SUB-E-1040 |  | Distribution Substation Submission | 4d | 2026-02-18 A | 2026-06-15 A | SDR-2-MILS-1000 FS+28d | 100% |
| SDR-2-ENG-SUB-E-1050 |  | MV Trench Configuration Details Submission | 4d | 2026-02-18 A | 2026-06-15 A | SDR-2-MILS-1000 FS+28d | 100% |
| SDR-2-ENG-SUB-E-1060 |  | MV Electrical Duct Banks Details Submission | 4d | 2026-02-18 A | 2026-06-15 A | SDR-2-MILS-1000 FS+28d | 100% |
| SDR-2-ENG-SUB-E-1070 |  | Distribution Transformers Submission | 4d | 2026-02-18 A | 2026-06-15 A | SDR-2-MILS-1000 FS+28d | 100% |
| SDR-2-ENG-SUB-E-1110 |  | Construction Details Lighting Poles Submission | 4d | 2026-02-18 A | 2026-02-23 A | SDR-2-MILS-1000 FS+28d | 100% |
| SDR-2-ENG-SUB-E-1120 |  | Base Plate Construction Details Submission | 4d | 2026-02-18 A | 2026-02-23 A | SDR-2-MILS-1000 FS+28d | 100% |
| SDR-2-ENG-SUB-E-1190 |  | Typical Trenches Crossing Detail Submission | 4d | 2026-02-18 A | 2026-02-23 A | SDR-2-MILS-1000 FS+28d | 100% |
| SDR-2-ENG-SUB-E-1200 |  | Manholes,Hand-Holes Details Submission | 4d | 2026-02-18 A | 2026-02-23 A | SDR-2-MILS-1000 FS+28d | 100% |
| SDR-2-ENG-SUB-E-1210 |  | Typical Details Of Pock Out Ducts Submission | 4d | 2026-02-18 A | 2026-02-23 A | SDR-2-MILS-1000 FS+28d | 100% |
| SDR-2-ENG-SUB-E-1130 |  | Lighting Pole Identification Submission | 4d | 2026-02-23 A | 2026-02-25 A | SDR-2-MILS-1000 FS+28d | 100% |
| SDR-2-ENG-SUB-E-1140 |  | Typical Feeder Pillar and Timer Switch Details Submission | 4d | 2026-02-23 A | 2026-02-25 A | SDR-2-MILS-1000 FS+28d | 100% |
| SDR-2-ENG-SUB-E-1150 |  | Public Lighting Draw-Pit Construction Details Submission | 4d | 2026-02-23 A | 2026-02-25 A | SDR-2-MILS-1000 FS+28d | 100% |
| SDR-2-ENG-SUB-E-1160 |  | Concrete Earth Pit Construction Details Submission | 4d | 2026-02-23 A | 2026-02-25 A | SDR-2-MILS-1000 FS+28d | 100% |
|  | 11 | **CCTV** |  | 2026-02-16 | 2026-06-01 |  |  |
| SDR-2-ENG-SUB-E-1220 |  | CCTV Overall Layout Submission | 4d | 2026-02-16 A | 2026-06-01 A | SDR-2-MILS-1000 FS+28d | 100% |
| SDR-2-ENG-SUB-E-1230 |  | CCTV Control Room Layout Submission | 4d | 2026-02-16 A | 2026-06-01 A | SDR-2-MILS-1000 FS+28d | 100% |
| SDR-2-ENG-SUB-E-1240 |  | CCTV System Schematic Drawing Submission | 4d | 2026-02-16 A | 2026-06-01 A | SDR-2-MILS-1000 FS+28d | 100% |
| SDR-2-ENG-SUB-E-1250 |  | CCTV System 7 MTR Pole Installation Detail Submission | 4d | 2026-02-16 A | 2026-06-01 A | SDR-2-MILS-1000 FS+28d | 100% |
| SDR-2-ENG-SUB-E-1260 |  | CCTV System 25 MTR Pole Installation Detail Submission | 4d | 2026-02-16 A | 2026-06-01 A | SDR-2-MILS-1000 FS+28d | 100% |
| SDR-2-ENG-SUB-E-1270 |  | CCTV System 35 MTR Pole Installation Detail Submission | 4d | 2026-02-16 A | 2026-06-01 A | SDR-2-MILS-1000 FS+28d | 100% |
| SDR-2-ENG-SUB-E-1280 |  | Typical Solar Panel Installation Detail Submission | 4d | 2026-02-16 A | 2026-06-01 A | SDR-2-MILS-1000 FS+28d | 100% |
|  | 10 | **Landscape & Irrigation Works** |  | 2026-02-18 | 2026-04-17 |  |  |
| SDR-2-ENG-SUB-M-1280 |  | Irrigation Layout Master Plan Submission | 4d | 2026-02-18 A | 2026-02-23 A | SDR-2-MILS-1000 FS+36d | 100% |
| SDR-2-ENG-SUB-M-1290 |  | Irrigation Network Profile Submission | 4d | 2026-02-23 A | 2026-02-25 A | SDR-2-MILS-1000 FS+36d | 100% |

| ID | WBS | Task | Duration | Start | Finish | Predecessors | Complete |
| --- | --- | --- | --- | --- | --- | --- | --- |
| SDR-2-ENG-SUB-M-1300 |  | Irrigation Network Standard Details Submission | 4d | 2026-02-23 A | 2026-02-24 A | SDR-2-MILS-1000 FS+36d | 100% |
| SDR-2-ENG-SUB-M-1310 |  | Irrigation Network Section Submission | 4d | 2026-02-23 A | 2026-02-24 A | SDR-2-MILS-1000 FS+36d | 100% |
| SDR-2-ENG-SUB-M-1320 |  | Landscape Layout Master Plan Submission | 4d | 2026-02-23 A | 2026-04-17 A | SDR-2-MILS-1000 FS+36d | 100% |
|  | 4 | **Approvals** |  | 2026-02-11 | 2026-10-05 |  |  |
|  | 4 | **Road Works** |  | 2026-02-11 | 2026-02-26 |  |  |
| SDR-2-ENG-APP-C-1000 |  | DEMOLISH WORKS OVERALL PLAN Approval | 11d | 2026-02-11 A | 2026-02-16 A | SDR-2-ENG-SUB-C-1000 | 100% |
| SDR-2-ENG-APP-C-1010 |  | ROAD ZONES LAYOUT PLAN Approval | 11d | 2026-02-12 A | 2026-02-17 A | SDR-2-ENG-SUB-C-1010 | 100% |
| SDR-2-ENG-APP-C-1030 |  | TYPICAL ROAD CROSS SECTIONS Approval | 11d | 2026-02-12 A | 2026-02-18 A | SDR-2-ENG-SUB-C-1030 | 100% |
| SDR-2-ENG-APP-C-1020 |  | ROAD LAYOUT PLAN Approval | 11d | 2026-02-15 A | 2026-02-19 A | SDR-2-ENG-SUB-C-1020 | 100% |
| SDR-2-ENG-APP-C-1040 |  | GRADING TYPICAL CROSS SECTIONS Approval | 11d | 2026-02-16 A | 2026-02-23 A | SDR-2-ENG-SUB-C-1040 | 100% |
| SDR-2-ENG-APP-C-1050 |  | ZONE A ROAD SETTING OUT PLAN Approval | 11d | 2026-02-16 A | 2026-02-23 A | SDR-2-ENG-SUB-C-1050 | 100% |
| SDR-2-ENG-APP-C-1060 |  | ZONE G ROAD SETTING OUT PLAN Approval | 11d | 2026-02-16 A | 2026-02-23 A | SDR-2-ENG-SUB-C-1060 | 100% |
| SDR-2-ENG-APP-C-1070 |  | TYPICAL PAVEMENT DETAILS Approval | 11d | 2026-02-17 A | 2026-02-25 A | SDR-2-ENG-SUB-C-1070 | 100% |
| SDR-2-ENG-APP-C-1080 |  | TYPICAL JUNCTION DETAIL LOCAL-1 & LOCAL-1 (40M ROW) Approval | 11d | 2026-02-17 A | 2026-02-25 A | SDR-2-ENG-SUB-C-1080 | 100% |
| SDR-2-ENG-APP-C-1090 |  | ROAD PROFILES (ZONE A) Approval | 11d | 2026-02-17 A | 2026-02-25 A | SDR-2-ENG-SUB-C-1090 | 100% |
| SDR-2-ENG-APP-C-1100 |  | ROAD PROFILES (ZONE G) Approval | 11d | 2026-02-17 A | 2026-02-25 A | SDR-2-ENG-SUB-C-1100 | 100% |
| SDR-2-ENG-APP-C-1110 |  | Overall Kerbing and Pavement Layout Approval | 11d | 2026-02-17 A | 2026-02-25 A | SDR-2-ENG-SUB-C-1110 | 100% |
| SDR-2-ENG-APP-C-1120 |  | Typical Concrete Kerb Details Approval | 11d | 2026-02-18 A | 2026-02-26 A | SDR-2-ENG-SUB-C-1120 | 100% |
| SDR-2-ENG-APP-C-1130 |  | Typical Pavement Details Approval | 11d | 2026-02-18 A | 2026-02-26 A | SDR-2-ENG-SUB-C-1130 | 100% |
| SDR-2-ENG-APP-C-1140 |  | Road Marking Layout Approval | 11d | 2026-02-18 A | 2026-02-26 A | SDR-2-ENG-SUB-C-1140 | 100% |
| SDR-2-ENG-APP-C-1150 |  | Road Marking Details Approval | 11d | 2026-02-18 A | 2026-02-26 A | SDR-2-ENG-SUB-C-1150 | 100% |
| SDR-2-ENG-APP-C-1160 |  | Road Marking And Signage Typical Standard Details Approval | 11d | 2026-02-18 A | 2026-02-26 A | SDR-2-ENG-SUB-C-1160 | 100% |
| SDR-2-ENG-APP-C-1170 |  | Standard Details Approval | 11d | 2026-02-18 A | 2026-02-26 A | SDR-2-ENG-SUB-C-1170 | 100% |
| SDR-2-ENG-APP-C-1180 |  | Site Safety Notice Board Approval | 11d | 2026-02-18 A | 2026-02-26 A | SDR-2-ENG-SUB-C-1180 | 100% |
| SDR-2-ENG-APP-C-1190 |  | Location Plan For Traffic Signage Approval | 11d | 2026-02-18 A | 2026-02-26 A | SDR-2-ENG-SUB-C-1190 | 100% |
|  | 5 | **Storm Water Drainage Network** |  | 2026-02-16 | 2026-05-24 |  |  |
| SDR-2-ENG-APP-M-1000 |  | Storm Drainage Master Plan Approval | 11d | 2026-02-16 A | 2026-05-10 A | SDR-2-ENG-SUB-M-1000 | 100% |
| SDR-2-ENG-APP-M-1010 |  | Storm Drainage Layout Approval | 11d | 2026-02-16 A | 2026-05-10 A | SDR-2-ENG-SUB-M-1010 | 100% |
| SDR-2-ENG-APP-M-1020 |  | Storm Network Profile Approval | 11d | 2026-02-18 A | 2026-05-24 A | SDR-2-ENG-SUB-M-1020 | 100% |
| SDR-2-ENG-APP-M-1050 |  | POND A LAYOUT AND PROFILE Approval | 11d | 2026-02-23 A | 2026-05-17 A | SDR-2-ENG-SUB-M-1050 | 100% |
| SDR-2-ENG-APP-M-1030 |  | Storm Network Standard Details Approval | 11d | 2026-02-25 A | 2026-03-04 A | SDR-2-ENG-SUB-M-1030 | 100% |
| SDR-2-ENG-APP-M-1040 |  | Storm Network Section Approval | 11d | 2026-02-25 A | 2026-05-24 A | SDR-2-ENG-SUB-M-1040 | 100% |
| SDR-2-ENG-APP-M-1060 |  | TYPICAL ENERGY DISSAPATION DETAILS Approval | 11d | 2026-02-25 A | 2026-05-24 A | SDR-2-ENG-SUB-M-1060 | 100% |
| SDR-2-ENG-APP-M-1070 |  | STORM WATER POND SIPHON PIPE DETAILS SApproval | 11d | 2026-02-25 A | 2026-05-24 A | SDR-2-ENG-SUB-M-1070 | 100% |
| SDR-2-ENG-APP-M-1080 |  | REINFORCEMENT CONCRETE WEIR AND GABION WALL DETAILS Approval | 11d | 2026-02-25 A | 2026-05-24 A | SDR-2-ENG-SUB-M-1080 | 100% |
| SDR-2-ENG-APP-M-1090 |  | TYPICAL TRENCH AND PIPE BEDDING DETAILS Approval | 11d | 2026-02-25 A | 2026-04-06 A | SDR-2-ENG-SUB-M-1090 | 100% |
| SDR-2-ENG-APP-M-1100 |  | FLUSH AND KERB INLET MANHOLE DETAILS Approval | 11d | 2026-02-25 A | 2026-04-06 A | SDR-2-ENG-SUB-M-1100 | 100% |
| SDR-2-ENG-APP-M-1110 |  | BOX PIPE CONNECTION AND BOX PIPE WIDENING DETAILS Approval | 11d | 2026-02-25 A | 2026-05-24 A | SDR-2-ENG-SUB-M-1110 | 100% |
| SDR-2-ENG-APP-M-1120 |  | TYPICAL BOX PIPE JUNCTION DETAILS Approval | 11d | 2026-02-25 A | 2026-05-24 A | SDR-2-ENG-SUB-M-1120 | 100% |
| SDR-2-ENG-APP-M-1130 |  | TYPICAL JUNCTION CHAMBER REINFORCEMENT DETAILS Approval | 11d | 2026-02-25 A | 2026-05-24 A | SDR-2-ENG-SUB-M-1130 | 100% |
| SDR-2-ENG-APP-M-1140 |  | DEPRESSED KERB TO SWALE/MANHOLE DETAILS Approval | 11d | 2026-02-25 A | 2026-05-24 A | SDR-2-ENG-SUB-M-1140 | 100% |
| SDR-2-ENG-APP-M-1150 |  | BOX PIPE AND SWALE CONNECTION DETAILS Approval | 11d | 2026-02-25 A | 2026-05-24 A | SDR-2-ENG-SUB-M-1150 | 100% |
|  | 6 | **Sewerage Network** |  | 2026-02-23 | 2026-05-20 |  |  |
| SDR-2-ENG-APP-M-1160 |  | Sewage Layout Master Plan Approval | 11d | 2026-02-23 A | 2026-05-10 A | SDR-2-ENG-SUB-M-1160 | 100% |
| SDR-2-ENG-APP-M-1170 |  | Sewage Network Profile Approval | 11d | 2026-02-23 A | 2026-05-20 A | SDR-2-ENG-SUB-M-1170 | 100% |
| SDR-2-ENG-APP-M-1180 |  | Sewage Network Standard Details Approval | 11d | 2026-02-25 A | 2026-05-20 A | SDR-2-ENG-SUB-M-1180 | 100% |
| SDR-2-ENG-APP-M-1190 |  | Sewage Network Section Approval | 11d | 2026-02-25 A | 2026-05-20 A | SDR-2-ENG-SUB-M-1190 | 100% |
|  | 7 | **TSE Network** |  | 2026-02-23 | 2026-04-25 |  |  |
| SDR-2-ENG-APP-M-1210 |  | TSE Network Profile Approval | 11d | 2026-02-23 A | 2026-04-16 A | SDR-2-ENG-SUB-M-1210 | 100% |
| SDR-2-ENG-APP-M-1220 |  | TSE Network Standard Details Approval | 11d | 2026-02-25 A | 2026-04-23 A | SDR-2-ENG-SUB-M-1220 | 100% |
| SDR-2-ENG-APP-M-1230 |  | TSE Network Section Approval | 11d | 2026-02-25 A | 2026-04-25 A | SDR-2-ENG-SUB-M-1230 | 100% |
| SDR-2-ENG-APP-M-1200 |  | TSE Layout Master Plan Approval | 11d | 2026-02-25 A | 2026-04-14 A | SDR-2-ENG-SUB-M-1200 | 100% |
|  | 8 | **Portable Water** |  | 2026-02-23 | 2026-05-20 |  |  |
| SDR-2-ENG-APP-M-1240 |  | Potable Water Piping Layout Master Plan Approval | 11d | 2026-02-23 A | 2026-04-29 A | SDR-2-ENG-SUB-M-1240 | 100% |
| SDR-2-ENG-APP-M-1250 |  | Potable Water Piping Layout Approval | 11d | 2026-02-23 A | 2026-04-29 A | SDR-2-ENG-SUB-M-1250 | 100% |
| SDR-2-ENG-APP-M-1270 |  | Potable Water Section Approval | 11d | 2026-02-23 A | 2026-05-20 A | SDR-2-ENG-SUB-M-1270 | 100% |
| SDR-2-ENG-APP-M-1260 |  | Potable Water Standard Details Approval | 11d | 2026-02-25 A | 2026-05-20 A | SDR-2-ENG-SUB-M-1260 | 100% |
|  | 9 | **Electrical** |  | 2026-02-17 | 2026-10-05 |  |  |
| SDR-2-ENG-APP-E-1080 |  | Street Lighting Layout Approval | 11d | 2026-02-17 A | 2026-03-05 A | SDR-2-ENG-SUB-E-1080 | 100% |
| SDR-2-ENG-APP-E-1090 |  | Single Line Diagram for Street Lighting Approval | 11d | 2026-02-17 A | 2026-04-22 A | SDR-2-ENG-SUB-E-1090 | 100% |
| SDR-2-ENG-APP-E-1170 |  | Telecom Overall Layout Approval | 11d | 2026-02-17 A | 2026-04-26 A | SDR-2-ENG-SUB-E-1170 | 100% |
| SDR-2-ENG-APP-E-1100 |  | Voltage Drop Calculations Approval | 11d | 2026-02-18 A | 2026-03-05 A | SDR-2-ENG-SUB-E-1100 | 100% |
| SDR-2-ENG-APP-E-1180 |  | Typical Trenches Detail Approval | 11d | 2026-02-18 A | 2026-04-20 A | SDR-2-ENG-SUB-E-1180 | 100% |
| SDR-2-ENG-APP-E-1190 |  | Typical Trenches Crossing Detail Approval | 11d | 2026-02-23 A | 2026-04-26 A | SDR-2-ENG-SUB-E-1190 | 100% |
| SDR-2-ENG-APP-E-1200 |  | Manholes,Hand-Holes Details Approval | 11d | 2026-02-23 A | 2026-05-12 A | SDR-2-ENG-SUB-E-1200 | 100% |
| SDR-2-ENG-APP-E-1210 |  | Typical Details Of Pock Out Ducts Approval | 11d | 2026-02-23 A | 2026-05-13 A | SDR-2-ENG-SUB-E-1210 | 100% |
| SDR-2-ENG-APP-E-1110 |  | Construction Details Lighting Poles Approval | 11d | 2026-02-23 A | 2026-03-02 A | SDR-2-ENG-SUB-E-1110 | 100% |
| SDR-2-ENG-APP-E-1120 |  | Base Plate Construction Details Approval | 11d | 2026-02-23 A | 2026-03-02 A | SDR-2-ENG-SUB-E-1120 | 100% |
| SDR-2-ENG-APP-E-1130 |  | Lighting Pole Identification Approval | 11d | 2026-02-25 A | 2026-03-04 A | SDR-2-ENG-SUB-E-1130 | 100% |
| SDR-2-ENG-APP-E-1140 |  | Typical Feeder Pillar and Timer Switch Details Approval | 11d | 2026-02-25 A | 2026-03-04 A | SDR-2-ENG-SUB-E-1140 | 100% |

| ID | WBS | Task | Duration | Start | Finish | Predecessors | Complete | Total float |
| --- | --- | --- | --- | --- | --- | --- | --- | --- |
| SDR-2-ENG-APP-E-1150 |  | Public Lighting Draw-Pit Construction Details Approval | 11d | 2026-02-25 A | 2026-03-04 A | SDR-2-ENG-SUB-E-1150 | 100% |  |
| SDR-2-ENG-APP-E-1160 |  | Concrete Earth Pit Construction Details Approval | 11d | 2026-02-25 A | 2026-03-04 A | SDR-2-ENG-SUB-E-1160 | 100% |  |
| SDR-2-ENG-APP-E-1000 |  | MV Network Layout Approval | 11d | 2026-06-15 A | 2026-10-05 | SDR-2-ENG-SUB-E-1000 |  | 0d |
| SDR-2-ENG-APP-E-1010 |  | MV Single Line Diagram Approval | 11d | 2026-06-15 A | 2026-10-05 | SDR-2-ENG-SUB-E-1010 |  | 0d |
| SDR-2-ENG-APP-E-1020 |  | Design Of MV Loops Approval | 11d | 2026-06-15 A | 2026-10-05 | SDR-2-ENG-SUB-E-1020 |  | 0d |
| SDR-2-ENG-APP-E-1030 |  | Loads For Plots Approval | 11d | 2026-06-15 A | 2026-10-05 | SDR-2-ENG-SUB-E-1030 |  | 0d |
| SDR-2-ENG-APP-E-1040 |  | Distribution Substation Approval | 11d | 2026-06-15 A | 2026-10-05 | SDR-2-ENG-SUB-E-1040 |  | 0d |
| SDR-2-ENG-APP-E-1050 |  | MV Trench Configuration Details Approval | 11d | 2026-06-15 A | 2026-10-05 | SDR-2-ENG-SUB-E-1050 |  | 0d |
| SDR-2-ENG-APP-E-1060 |  | MV Electrical Duct Banks Details Approval | 11d | 2026-06-15 A | 2026-10-05 | SDR-2-ENG-SUB-E-1060 |  | 0d |
| SDR-2-ENG-APP-E-1070 |  | Distribution Transformers Approval | 11d | 2026-06-15 A | 2026-10-05 | SDR-2-ENG-SUB-E-1070 |  | 0d |
|  | 11 | **CCTV** |  | 2026-06-11 | 2026-10-05 |  |  |  |
| SDR-2-ENG-APP-E-1250 |  | CCTV System 7 MTR Pole Installation Detail Approval | 11d | 2026-06-11 A | 2026-06-15 A | SDR-2-ENG-SUB-E-1250 | 100% |  |
| SDR-2-ENG-APP-E-1260 |  | CCTV System 25 MTR Pole Installation Detail Approval | 11d | 2026-06-11 A | 2026-06-15 A | SDR-2-ENG-SUB-E-1260 | 100% |  |
| SDR-2-ENG-APP-E-1270 |  | CCTV System 35 MTR Pole Installation Detail Approval | 11d | 2026-06-11 A | 2026-06-15 A | SDR-2-ENG-SUB-E-1270 | 100% |  |
| SDR-2-ENG-APP-E-1220 |  | CCTV Overall Layout Approval | 11d | 2026-06-15 A | 2026-06-28 A | SDR-2-ENG-SUB-E-1220 | 100% |  |
| SDR-2-ENG-APP-E-1230 |  | CCTV Control Room Layout Approval | 11d | 2026-06-15 A | 2026-08-05 A | SDR-2-ENG-SUB-E-1230 | 100% |  |
| SDR-2-ENG-APP-E-1240 |  | CCTV System Schematic Drawing Approval | 11d | 2026-06-15 A | 2026-08-05 A | SDR-2-ENG-SUB-E-1240 | 100% |  |
| SDR-2-ENG-APP-E-1280 |  | Typical Solar Panel Installation Detail Approval | 11d | 2026-06-15 A | 2026-10-05 | SDR-2-ENG-SUB-E-1280 |  | 0d |
|  | 10 | **Landscape & Irrigation Works** |  | 2026-02-23 | 2026-06-08 |  |  |  |
| SDR-2-ENG-APP-M-1280 |  | Irrigation Layout Master Plan Approval | 11d | 2026-02-23 A | 2026-04-28 A | SDR-2-ENG-SUB-M-1280 | 100% |  |
| SDR-2-ENG-APP-M-1300 |  | Irrigation Network Standard Details Approval | 11d | 2026-02-24 A | 2026-04-28 A | SDR-2-ENG-SUB-M-1300 | 100% |  |
| SDR-2-ENG-APP-M-1310 |  | Irrigation Network Section Approval | 11d | 2026-02-24 A | 2026-06-08 A | SDR-2-ENG-SUB-M-1310 | 100% |  |
| SDR-2-ENG-APP-M-1290 |  | Irrigation Network Profile Approval | 11d | 2026-02-25 A | 2026-04-28 A | SDR-2-ENG-SUB-M-1290 | 100% |  |
| SDR-2-ENG-APP-M-1320 |  | Landscape Layout Master Plan Approval | 11d | 2026-04-17 A | 2026-05-20 A | SDR-2-ENG-SUB-M-1320 | 100% |  |
|  | 3 | **Materials** |  | 2026-02-09 | 2026-10-05 |  |  |  |
|  | 5 | **Materials Submission** |  | 2026-02-09 | 2026-05-05 |  |  |  |
|  | 2 | **Short Lead Items** |  | 2026-02-09 | 2026-05-05 |  |  |  |
|  | 2 | **Civil** |  | 2026-02-09 | 2026-02-26 |  |  |  |
| SDR-2-PRO-MSS-C-1000 |  | Earth works material submission | 2d | 2026-02-09 A | 2026-02-10 A | SDR-2-ENG-APP-C-1020, SDR-2-ENG-APP-C-1000, SDR-2-ENG-APP-C-1010, SDR-2-ENG-APP-C-1050, SDR-2-ENG-APP-C-1060, SDR-2-ENG-APP-C-1090, SDR-2-ENG-APP-C-1100, SDR-2-ENG-APP-C-1170, SDR-2-ENG-APP-C-1180 | 100% |  |
| SDR-2-PRO-MSS-C-1010 |  | Ready mix concrete submission | 2d | 2026-02-11 A | 2026-02-12 A | SDR-2-ENG-APP-C-1120 | 100% |  |
| SDR-2-PRO-MSS-C-1040 |  | Kerbstone submission | 2d | 2026-02-11 A | 2026-02-12 A | SDR-2-ENG-APP-C-1110, SDR-2-ENG-APP-M-1140 | 100% |  |
| SDR-2-PRO-MSS-C-1020 |  | Asphalt Mix submission | 2d | 2026-02-14 A | 2026-02-15 A | SDR-2-ENG-APP-C-1020 | 100% |  |
| SDR-2-PRO-MSS-C-1030 |  | Road Marking submission | 2d | 2026-02-16 A | 2026-02-17 A | SDR-2-ENG-APP-C-1140, SDR-2-ENG-APP-C-1150, SDR-2-ENG-APP-C-1160 | 100% |  |
| SDR-2-PRO-MSS-C-1050 |  | Interlock Tiles submission | 2d | 2026-02-16 A | 2026-02-18 A | SDR-2-ENG-APP-C-1070, SDR-2-ENG-APP-C-1130 | 100% |  |
| SDR-2-PRO-MSS-C-1060 |  | Traffic Signage submission | 2d | 2026-02-19 A | 2026-02-23 A | SDR-2-ENG-APP-C-1190 | 100% |  |
| SDR-2-PRO-MSS-C-1070 |  | Construction material submission | 2d | 2026-02-19 A | 2026-02-23 A | SDR-2-ENG-APP-C-1080, SDR-2-ENG-APP-M-1080 | 100% |  |
| SDR-2-PRO-MSS-C-1090 |  | Protection Bollards for CCTV Pole submission | 2d | 2026-02-19 A | 2026-02-24 A | SDR-2-ENG-APP-E-1250 | 100% |  |
| SDR-2-PRO-MSS-C-1100 |  | Protection (Guard rail) for Fire hydrant submission | 2d | 2026-02-19 A | 2026-02-24 A | SDR-2-PREL-1100, SDR-2-ENG-APP-E-1240, SDR-2-PRO-MSS-C-1090 SS | 100% |  |
| SDR-2-PRO-MSS-C-1080 |  | Fence for Electrical works submission | 2d | 2026-02-23 A | 2026-02-26 A | SDR-2-PREL-1100, SDR-2-ENG-APP-E-1150, SDR-2-PRO-MSS-C-1070 SS | 100% |  |
|  | 4 | **Electrical** |  | 2026-02-09 | 2026-02-15 |  |  |  |
| SDR-2-PRO-MSS-E-1000 |  | Termination Kits & Joints submission | 2d | 2026-02-09 A | 2026-02-10 A | SDR-2-ENG-APP-E-1080 | 100% |  |
| SDR-2-PRO-MSS-E-1010 |  | UPVC Ducts & HDPE Ducts for Telecom network submission | 2d | 2026-02-11 A | 2026-02-12 A | SDR-2-ENG-APP-E-1010 SS | 100% |  |
| SDR-2-PRO-MSS-E-1020 |  | Grounding System submission | 2d | 2026-02-14 A | 2026-02-15 A | SDR-2-ENG-APP-E-1000 SS | 100% |  |
|  | 5 | **CCTV** |  | 2026-02-16 | 2026-05-05 |  |  |  |
| SDR-2-PRO-MSS-E-1030 |  | PECD Ducts for CCTV network submission | 2d | 2026-02-16 A | 2026-05-05 A | SDR-2-ENG-APP-E-1240 | 100% |  |
|  | 1 | **Long Lead Items** |  | 2026-02-09 | 2026-04-21 |  |  |  |
|  | 2 | **Mechanical** |  | 2026-02-09 | 2026-02-25 |  |  |  |
| SDR-2-PRO-MSL-M-1000 |  | GRP Pipes & UPVC Pipes &Fittings submission | 2d | 2026-02-09 A | 2026-02-10 A | SDR-2-ENG-APP-M-1000, SDR-2-ENG-APP-C-1030, SDR-2-ENG-APP-C-1040, SDR-2-ENG-APP-M-1020, SDR-2-ENG-APP-M-1030, SDR-2-ENG-APP-M-1050, SDR-2-ENG-APP-M-1070, SDR-2-ENG-APP-M-1160, SDR-2-ENG-APP-M-1170, SDR-2-ENG-APP-M-1180, SDR-2-ENG-APP-M-1190, SDR-2-ENG-APP-M-1200, SDR-2-ENG-APP-M-1210, SDR-2-ENG-APP-M-1220, SDR-2-ENG-APP-M-1230 | 100% |  |
| SDR-2-PRO-MSL-M-1010 |  | HDPE Pipes & Fittings submission | 2d | 2026-02-11 A | 2026-02-12 A | SDR-2-ENG-APP-M-1000, SDR-2-ENG-APP-M-1110, SDR-2-ENG-APP-M-1120, SDR-2-ENG-APP-M-1150, SDR-2-ENG-APP-M-1240, SDR-2-ENG-APP-M-1250, SDR-2-ENG-APP-M-1260, SDR-2-ENG-APP-M-1270, SDR-2-ENG-APP-M-1280 SS, SDR-2-ENG-APP-M-1300 SS, SDR-2-ENG-APP-M-1310 SS, SDR-2-ENG-APP-M-1320 SS | 100% |  |
| SDR-2-PRO-MSL-M-1020 |  | Valves submission | 2d | 2026-02-11 A | 2026-02-12 A | SDR-2-ENG-APP-M-1040 | 100% |  |
| SDR-2-PRO-MSL-M-1030 |  | Manhole submission | 2d | 2026-02-14 A | 2026-02-15 A | SDR-2-ENG-APP-M-1100 | 100% |  |
| SDR-2-PRO-MSL-M-1040 |  | Catch Basin submission | 2d | 2026-02-16 A | 2026-02-17 A | SDR-2-ENG-APP-M-1130 | 100% |  |
| SDR-2-PRO-MSL-M-1050 |  | Manhole, Catch basin and Valve box Cover submission | 2d | 2026-02-18 A | 2026-02-21 A | SDR-2-ENG-APP-M-1100 | 100% |  |
| SDR-2-PRO-MSL-M-1060 |  | Fire Hydrant submission | 2d | 2026-02-21 A | 2026-02-25 A | SDR-2-ENG-APP-M-1060 | 100% |  |
| SDR-2-PRO-MSL-M-1070 |  | Valve of Fire Hydrant submission | 2d | 2026-02-21 A | 2026-02-25 A | SDR-2-ENG-APP-M-1090 | 100% |  |
|  | 3 | **Electrical** |  | 2026-02-09 | 2026-04-21 |  |  |  |
| SDR-2-PRO-MSL-E-1000 |  | MV Cables submission | 2d | 2026-02-09 A | 2026-02-10 A | SDR-2-ENG-APP-E-1000 SS, SDR-2-ENG-APP-E-1020 SS, SDR-2-ENG-APP-E-1050 SS | 100% |  |
| SDR-2-PRO-MSL-E-1010 |  | LV Cables submission | 2d | 2026-02-11 A | 2026-02-12 A | SDR-2-ENG-APP-E-1100, SDR-2-ENG-APP-E-1160, SDR-2-ENG-APP-E-1170, SDR-2-ENG-APP-E-1190, SDR-2-ENG-APP-E-1210, SDR-2-ENG-APP-E-1040 SS, SDR-2-ENG-APP-E-1030 SS | 100% |  |
| SDR-2-PRO-MSL-E-1020 |  | Street Lighting Poles submission | 2d | 2026-02-11 A | 2026-02-12 A | SDR-2-ENG-APP-E-1110 | 100% |  |
| SDR-2-PRO-MSL-E-1030 |  | Street Lighting Fixtures submission | 2d | 2026-02-11 A | 2026-02-12 A | SDR-2-ENG-APP-E-1080, SDR-2-ENG-APP-E-1090, SDR-2-ENG-APP-E-1130 | 100% |  |
| SDR-2-PRO-MSL-E-1040 |  | DrawPits for Lighting submission | 2d | 2026-02-11 A | 2026-02-12 A | SDR-2-ENG-APP-E-1080 | 100% |  |
| SDR-2-PRO-MSL-E-1050 |  | Concrete Manholes & DrawPits for Telecom Network submission | 2d | 2026-02-14 A | 2026-02-15 A | SDR-2-ENG-APP-E-1180, SDR-2-ENG-APP-E-1200 | 100% |  |
| SDR-2-PRO-MSL-E-1180 |  | CCTV Wireless P2P bridges submission | 2d | 2026-02-15 A | 2026-04-21 A | SDR-2-ENG-APP-E-1250 | 100% |  |
| SDR-2-PRO-MSL-E-1060 |  | Switchgears - (RMUs) submission | 2d | 2026-02-16 A | 2026-02-17 A | SDR-2-ENG-APP-E-1040 SS | 100% |  |
| SDR-2-PRO-MSL-E-1070 |  | Unit Substation submission | 2d | 2026-02-16 A | 2026-02-17 A | SDR-2-ENG-APP-E-1040 SS, SDR-2-ENG-APP-E-1070 SS | 100% |  |
| SDR-2-PRO-MSL-E-1080 |  | Lighting Panels submission | 2d | 2026-02-16 A | 2026-02-17 A | SDR-2-ENG-APP-E-1080 | 100% |  |
| SDR-2-PRO-MSL-E-1090 |  | KWH Meter with mounting frame submission | 2d | 2026-02-16 A | 2026-02-17 A | SDR-2-ENG-APP-E-1120 | 100% |  |
| SDR-2-PRO-MSL-E-1100 |  | Main Feeder Pillar submission | 2d | 2026-02-16 A | 2026-02-17 A | SDR-2-ENG-APP-E-1140 | 100% |  |
| SDR-2-PRO-MSL-E-1190 |  | CCTV UPS submission | 2d | 2026-02-17 A | 2026-04-21 A | SDR-2-ENG-APP-E-1220 | 100% |  |
| SDR-2-PRO-MSL-E-1110 |  | CCTV Poles including all hardwares submission | 2d | 2026-02-18 A | 2026-04-21 A | SDR-2-ENG-APP-E-1260 | 100% |  |

| ID | WBS | Task | Duration | Start | Finish | Predecessors | Complete | Total float |
| --- | --- | --- | --- | --- | --- | --- | --- | --- |
| SDR-2-PRO-MSL-E-1120 |  | CCTV Cables "Power" submission | 2d | 2026-02-18 A | 2026-04-21 A | SDR-2-ENG-APP-E-1220, SDR-2-ENG-APP-E-1270, SDR-2-ENG-APP-E-1060 SS | 100% |  |
| SDR-2-PRO-MSL-E-1130 |  | CCTV Cables "CAT6" submission | 2d | 2026-02-18 A | 2026-04-21 A | SDR-2-ENG-APP-E-1230 | 100% |  |
| SDR-2-PRO-MSL-E-1200 |  | CCTV Solar System submission | 2d | 2026-02-19 A | 2026-04-21 A | SDR-2-ENG-APP-E-1280 SS | 100% |  |
| SDR-2-PRO-MSL-E-1140 |  | Racks and Patch panels submission | 2d | 2026-02-21 A | 2026-04-21 A | SDR-2-ENG-APP-E-1280 SS | 100% |  |
| SDR-2-PRO-MSL-E-1150 |  | CCTV System,Servers & WorkStations submission | 2d | 2026-02-21 A | 2026-04-21 A | SDR-2-ENG-APP-E-1230 | 100% |  |
| SDR-2-PRO-MSL-E-1160 |  | Professional 55" Video wall at control room submission | 2d | 2026-02-21 A | 2026-04-21 A | SDR-2-ENG-APP-E-1140 | 100% |  |
| SDR-2-PRO-MSL-E-1170 |  | CCTV Switches submission | 3d | 2026-02-21 A | 2026-04-21 A | SDR-2-ENG-APP-E-1220 | 100% |  |
|  | 6 | **Materials Approval** |  | 2026-02-09 | 2026-10-05 |  |  |  |
|  | 2 | **Short Lead Items** |  | 2026-02-09 | 2026-10-05 |  |  |  |
|  | 1 | **Civil** |  | 2026-02-09 | 2026-10-05 |  |  |  |
| SDR-2-PRO-MAS-C-1000 |  | Earth works material Approve | 3d | 2026-02-09 A | 2026-03-12 A | SDR-2-PRO-MSS-C-1000 | 100% |  |
| SDR-2-PRO-MAS-C-1010 |  | Ready mix concrete Approve | 3d | 2026-02-14 A | 2026-05-31 A | SDR-2-PRO-MSS-C-1010 | 100% |  |
| SDR-2-PRO-MAS-C-1040 |  | Kerbstone Approve | 3d | 2026-02-14 A | 2026-04-01 A | SDR-2-PRO-MSS-C-1040 | 100% |  |
| SDR-2-PRO-MAS-C-1020 |  | Asphalt Mix Approve | 3d | 2026-02-16 A | 2026-06-09 A | SDR-2-PRO-MSS-C-1020, SDR-2-PRO-MAS-C-1000 | 100% |  |
| SDR-2-PRO-MAS-C-1030 |  | Road Marking Approve | 3d | 2026-02-18 A | 2026-10-05 | SDR-2-PRO-MSS-C-1030 |  | 0d |
| SDR-2-PRO-MAS-C-1050 |  | Interlock Tiles Approve | 3d | 2026-02-19 A | 2026-04-01 A | SDR-2-PRO-MSS-C-1050 | 100% |  |
| SDR-2-PRO-MAS-C-1060 |  | Traffic Signage Approve | 3d | 2026-02-23 A | 2026-10-05 | SDR-2-PRO-MSS-C-1060 |  | 0d |
| SDR-2-PRO-MAS-C-1070 |  | Construction material Approve | 3d | 2026-02-23 A | 2026-06-08 A | SDR-2-PRO-MSS-C-1070 | 100% |  |
| SDR-2-PRO-MAS-C-1090 |  | Protection Bollards for CCTV Pole Approve | 3d | 2026-02-24 A | 2026-06-02 A | SDR-2-PRO-MSS-C-1090 | 100% |  |
| SDR-2-PRO-MAS-C-1100 |  | Protection (Guard rail) for Fire hydrant Approve | 3d | 2026-02-24 A | 2026-06-02 A | SDR-2-PRO-MSS-C-1100 | 100% |  |
| SDR-2-PRO-MAS-C-1080 |  | Fence for Electrical works Approve | 3d | 2026-02-27 A | 2026-06-01 A | SDR-2-PRO-MSS-C-1080 | 100% |  |
|  | 3 | **Electrical** |  | 2026-02-11 | 2026-06-01 |  |  |  |
| SDR-2-PRO-MAS-E-1000 |  | Termination Kits & Joints Approve | 3d | 2026-02-11 A | 2026-05-13 A | SDR-2-PRO-MSS-E-1000 | 100% |  |
| SDR-2-PRO-MAS-E-1010 |  | UPVC Ducts & HDPE Ducts for Telecom network Approve | 3d | 2026-02-14 A | 2026-04-05 A | SDR-2-PRO-MSS-E-1010 | 100% |  |
| SDR-2-PRO-MAS-E-1020 |  | Grounding System Approve | 3d | 2026-02-16 A | 2026-04-18 A | SDR-2-PRO-MSS-E-1020 | 100% |  |
| SDR-2-PRO-MAS-E-1030 |  | PECD Ducts for CCTV network Approve | 3d | 2026-02-18 A | 2026-06-01 A | SDR-2-PRO-MSS-E-1030 | 100% |  |
|  | 1 | **Long Lead Items** |  | 2026-02-11 | 2026-05-21 |  |  |  |
|  | 2 | **Mechanical** |  | 2026-02-11 | 2026-03-01 |  |  |  |
| SDR-2-PRO-MAL-M-1000 |  | GRP Pipes & UPVC Pipes & Fittings Approve | 3d | 2026-02-11 A | 2026-02-14 A | SDR-2-PRO-MSL-M-1000 | 100% |  |
| SDR-2-PRO-MAL-M-1010 |  | HDPE Pipes & Fittings Approve | 3d | 2026-02-14 A | 2026-02-16 A | SDR-2-PRO-MSL-M-1010 | 100% |  |
| SDR-2-PRO-MAL-M-1020 |  | Valves Approve | 3d | 2026-02-14 A | 2026-02-16 A | SDR-2-PRO-MSL-M-1020 | 100% |  |
| SDR-2-PRO-MAL-M-1030 |  | Manhole Approve | 3d | 2026-02-16 A | 2026-02-19 A | SDR-2-PRO-MSL-M-1030, SDR-2-PRO-MAL-M-1000 | 100% |  |
| SDR-2-PRO-MAL-M-1040 |  | Catch Basin Approve | 3d | 2026-02-18 A | 2026-02-24 A | SDR-2-PRO-MSL-M-1040 | 100% |  |
| SDR-2-PRO-MAL-M-1050 |  | Manhole, Catch basin and Valve box Cover Approve | 3d | 2026-02-21 A | 2026-02-27 A | SDR-2-PRO-MSL-M-1050 | 100% |  |
| SDR-2-PRO-MAL-M-1060 |  | Fire Hydrant Approve | 3d | 2026-02-26 A | 2026-03-01 A | SDR-2-PRO-MSL-M-1060 | 100% |  |
| SDR-2-PRO-MAL-M-1070 |  | Valve of Fire Hydrant Approve | 3d | 2026-02-26 A | 2026-03-01 A | SDR-2-PRO-MSL-M-1070 | 100% |  |
|  | 3 | **Electrical** |  | 2026-02-11 | 2026-05-21 |  |  |  |
| SDR-2-PRO-MAL-E-1000 |  | MV Cables Approve | 3d | 2026-02-11 A | 2026-02-14 A | SDR-2-PRO-MSL-E-1000 | 100% |  |
| SDR-2-PRO-MAL-E-1010 |  | LV Cables Approve | 3d | 2026-02-14 A | 2026-02-16 A | SDR-2-PRO-MSL-E-1010 | 100% |  |
| SDR-2-PRO-MAL-E-1020 |  | Street Lighting Poles Approve | 3d | 2026-02-14 A | 2026-04-20 A | SDR-2-PRO-MSL-E-1020 | 100% |  |
| SDR-2-PRO-MAL-E-1030 |  | Street Lighting Fixtures Approve | 3d | 2026-02-14 A | 2026-04-20 A | SDR-2-PRO-MSL-E-1030 | 100% |  |
| SDR-2-PRO-MAL-E-1040 |  | DrawPits for Lighting Approve | 3d | 2026-02-14 A | 2026-04-20 A | SDR-2-PRO-MSL-E-1040 | 100% |  |
| SDR-2-PRO-MAL-E-1050 |  | Concrete Manholes & DrawPits for Telecom Network Approve | 3d | 2026-02-16 A | 2026-05-12 A | SDR-2-PRO-MSL-E-1050 | 100% |  |
| SDR-2-PRO-MAL-E-1060 |  | Switchgears - (RMUs) Approve | 3d | 2026-02-18 A | 2026-04-05 A | SDR-2-PRO-MSL-E-1060 | 100% |  |
| SDR-2-PRO-MAL-E-1070 |  | Unit Substation Approve | 3d | 2026-02-18 A | 2026-05-12 A | SDR-2-PRO-MSL-E-1070 | 100% |  |
| SDR-2-PRO-MAL-E-1080 |  | Lighting Panels Approve | 3d | 2026-02-18 A | 2026-05-12 A | SDR-2-PRO-MSL-E-1080 | 100% |  |
| SDR-2-PRO-MAL-E-1090 |  | KWH Meter with mounting frame Approve | 3d | 2026-02-18 A | 2026-05-21 A | SDR-2-PRO-MSL-E-1090 | 100% |  |
| SDR-2-PRO-MAL-E-1100 |  | Main Feeder Pillar Approve | 3d | 2026-02-18 A | 2026-05-13 A | SDR-2-PRO-MSL-E-1100 | 100% |  |
| SDR-2-PRO-MAL-E-1130 |  | CCTV Cables "CAT6" Approve | 3d | 2026-04-22 A | 2026-04-29 A | SDR-2-PRO-MSL-E-1130 | 100% |  |
| SDR-2-PRO-MAL-E-1140 |  | Racks and Patch panels Approve Approve | 3d | 2026-04-22 A | 2026-04-29 A | SDR-2-PRO-MSL-E-1140 | 100% |  |
| SDR-2-PRO-MAL-E-1150 |  | CCTV System,Servers & WorkStations Approve | 3d | 2026-04-22 A | 2026-04-29 A | SDR-2-PRO-MSL-E-1150 | 100% |  |
| SDR-2-PRO-MAL-E-1160 |  | Professional 55" Video wall at control room Approve | 3d | 2026-04-22 A | 2026-04-29 A | SDR-2-PRO-MSL-E-1160 | 100% |  |
| SDR-2-PRO-MAL-E-1170 |  | CCTV Switches Approve | 3d | 2026-04-22 A | 2026-04-29 A | SDR-2-PRO-MSL-E-1170 SS+2d | 100% |  |
| SDR-2-PRO-MAL-E-1180 |  | CCTV Wireless P2P bridges Approve | 3d | 2026-04-22 A | 2026-04-29 A | SDR-2-PRO-MSL-E-1180 | 100% |  |
| SDR-2-PRO-MAL-E-1190 |  | CCTV UPS Approve | 3d | 2026-04-22 A | 2026-04-29 A | SDR-2-PRO-MSL-E-1190 | 100% |  |
| SDR-2-PRO-MAL-E-1200 |  | CCTV Solar System Approve | 3d | 2026-04-22 A | 2026-04-29 A | SDR-2-PRO-MSL-E-1200 FS+3d | 100% |  |
| SDR-2-PRO-MAL-E-1110 |  | CCTV Poles including all hardwares Approve | 3d | 2026-04-26 A | 2026-04-29 A | SDR-2-PRO-MSL-E-1110 | 100% |  |
| SDR-2-PRO-MAL-E-1120 |  | CCTV Cables "Power" Approve | 3d | 2026-04-26 A | 2026-04-29 A | SDR-2-PRO-MSL-E-1120 | 100% |  |
|  | PR | **Procurement** |  | 2026-02-17 | 2027-01-24 |  |  |  |
|  | 3 | **Purchase Order** |  | 2026-02-17 | 2026-10-05 |  |  |  |
|  | 1 | **Civil** |  | 2026-02-18 | 2026-10-05 |  |  |  |
| SDR-2-PRO-PO-C-1000 |  | Earth works material PO | 13d | 2026-02-18 A | 2026-05-25 A | SDR-2-PRO-MAS-C-1000 FS+2d | 100% |  |
| SDR-2-PRO-PO-C-1010 |  | Ready mix concrete PO | 19d | 2026-02-18 A | 2026-06-07 A | SDR-2-PRO-MAS-C-1010 | 100% |  |
| SDR-2-PRO-PO-C-1020 |  | Asphalt Mix PO | 17d | 2026-02-18 A | 2026-10-05 | SDR-2-PRO-MAS-C-1020, SDR-2-MILS-1040, SDR-2-MILS-1090 FF |  | 70d |
| SDR-2-PRO-PO-C-1070 |  | Construction material PO | 12d | 2026-02-18 A | 2026-04-07 A | SDR-2-PRO-MAS-C-1070 | 100% |  |
| SDR-2-PRO-PO-C-1030 |  | Kerbstone PO | 12d | 2026-03-08 A | 2026-10-05 | SDR-2-PRO-MAS-C-1040, SDR-2-MILS-1000 FS+66d |  | 33.9d |
| SDR-2-PRO-PO-C-1050 |  | Interlock Tiles PO | 11d | 2026-04-12 A | 2026-10-05 | SDR-2-PRO-MAS-C-1050, SDR-2-MILS-1000 FS+84d |  | 92d |
| SDR-2-PRO-PO-C-1100 |  | Protection (Guard rail) for Fire hydrant PO | 13d | 2026-04-26 A | 2026-10-05 | SDR-2-PRO-MAS-C-1100, SDR-2-MILS-1000 FS+103d |  | 1d |
| SDR-2-PRO-PO-C-1060 |  | Traffic Signage PO | 13d | 2026-04-30 A | 2026-10-05 | SDR-2-MILS-1000 FS+92d, SDR-2-PRO-MAS-C-1060 FF |  | 12d |
| SDR-2-PRO-PO-C-1040 |  | Road Marking PO | 14d | 2026-05-06 A | 2026-10-05 | SDR-2-MILS-1000 FS+73d, SDR-2-PRO-MAS-C-1030 FF |  | 3d |

| ID | WBS | Task | Duration | Start | Finish | Predecessors | Complete | Total float |
| --- | --- | --- | --- | --- | --- | --- | --- | --- |
| SDR-2-PRO-PO-C-1080 |  | Fence for Electrical works PO | 13d | 2026-08-05 A | 2026-10-05 | SDR-2-PRO-MAS-C-1080, SDR-2-MILS-1000 FS+92d |  | 42d |
| SDR-2-PRO-PO-C-1090 |  | Protection Bollards for CCTV Pole PO | 13d | 2026-08-10 A | 2026-10-05 | SDR-2-PRO-MAS-C-1090, SDR-2-MILS-1000 FS+115d |  | 94d |
|  | 2 | **Mechanical** |  | 2026-02-23 | 2026-06-15 |  |  |  |
| SDR-2-PRO-PO-M-1000 |  | GRP Pipes & UPVC Pipes &Fittings PO | 16d | 2026-02-23 A | 2026-04-01 A | SDR-2-PRO-MAL-M-1000, SDR-2-MILS-1000 FS+54d | 100% |  |
| SDR-2-PRO-PO-M-1020 |  | Valves PO | 13d | 2026-03-07 A | 2026-06-15 A | SDR-2-PRO-MAL-M-1020, SDR-2-MILS-1000 FS+79d | 100% |  |
| SDR-2-PRO-PO-M-1010 |  | HDPE Pipes & Fittings PO | 13d | 2026-03-07 A | 2026-03-12 A | SDR-2-PRO-MAL-M-1010, SDR-2-MILS-1000 FS+75d | 100% |  |
| SDR-2-PRO-PO-M-1060 |  | Fire Hydrant PO | 14d | 2026-03-08 A | 2026-03-09 A | SDR-2-PRO-MAL-M-1060, SDR-2-MILS-1000 FS+107d | 100% |  |
| SDR-2-PRO-PO-M-1070 |  | Valve of Fire Hydrant PO | 14d | 2026-03-08 A | 2026-03-09 A | SDR-2-PRO-MAL-M-1070, SDR-2-MILS-1000 FS+107d | 100% |  |
| SDR-2-PRO-PO-M-1030 |  | Manhole PO | 13d | 2026-03-12 A | 2026-05-04 A | SDR-2-PRO-MAL-M-1030, SDR-2-MILS-1000 FS+68d | 100% |  |
| SDR-2-PRO-PO-M-1050 |  | Manhole, Catch basin and Valve box Cover PO | 13d | 2026-03-13 A | 2026-06-15 A | SDR-2-PRO-MAL-M-1050, SDR-2-MILS-1000 FS+97d | 100% |  |
| SDR-2-PRO-PO-M-1040 |  | Catch Basin PO | 13d | 2026-03-14 A | 2026-06-08 A | SDR-2-PRO-MAL-M-1040, SDR-2-MILS-1000 FS+87d | 100% |  |
|  | 3 | **Electrical** |  | 2026-02-17 | 2026-10-05 |  |  |  |
| SDR-2-PRO-PO-E-1060 |  | UPVC Ducts & HDPE Ducts for Telecom network PO | 18d | 2026-02-17 A | 2026-06-01 A | SDR-2-PRO-MAS-E-1010, SDR-2-MILS-1000 FS+48d | 100% |  |
| SDR-2-PRO-PO-E-1010 |  | Termination Kits & Joints PO | 17d | 2026-02-25 A | 2026-09-10 A | SDR-2-PRO-MAS-E-1000, SDR-2-MILS-1000 FS+56d | 100% |  |
| SDR-2-PRO-PO-E-1000 |  | MV Cables PO | 17d | 2026-02-25 A | 2026-03-16 A | SDR-2-PRO-MAL-E-1000, SDR-2-MILS-1000 FS+56d | 100% |  |
| SDR-2-PRO-PO-E-1020 |  | LV Cables PO | 11d | 2026-03-16 A | 2026-06-01 A | SDR-2-PRO-MAL-E-1010, SDR-2-MILS-1000 FS+70d | 100% |  |
| SDR-2-PRO-PO-E-1080 |  | Grounding System PO | 13d | 2026-03-29 A | 2026-06-01 A | SDR-2-PRO-MAS-E-1020, SDR-2-MILS-1000 FS+75d | 100% |  |
| SDR-2-PRO-PO-E-1100 |  | Unit Substation PO | 13d | 2026-04-15 A | 2026-10-05 | SDR-2-PRO-MAL-E-1070, SDR-2-MILS-1000 FS+87d |  | 11d |
| SDR-2-PRO-PO-E-1090 |  | Switchgears - (RMUs) PO | 13d | 2026-04-22 A | 2026-04-26 A | SDR-2-PRO-MAL-E-1060, SDR-2-MILS-1000 FS+85d | 100% |  |
| SDR-2-PRO-PO-E-1070 |  | Concrete Manholes & DrawPits for Telecom Network PO | 13d | 2026-04-26 A | 2026-08-04 A | SDR-2-PRO-MAL-E-1050, SDR-2-MILS-1000 FS+63d | 100% |  |
| SDR-2-PRO-PO-E-1150 |  | CCTV Poles including all hardwares PO | 14d | 2026-04-26 A | 2026-10-05 | SDR-2-PRO-MAL-E-1110, SDR-2-MILS-1000 FS+109d |  | 72d |
| SDR-2-PRO-PO-E-1160 |  | CCTV Cables "Power" PO | 13d | 2026-04-26 A | 2026-10-05 | SDR-2-PRO-MAL-E-1120, SDR-2-MILS-1000 FS+115d |  | 72d |
| SDR-2-PRO-PO-E-1170 |  | CCTV Cables "CAT6" PO | 13d | 2026-04-26 A | 2026-10-05 | SDR-2-PRO-MAL-E-1130, SDR-2-MILS-1000 FS+115d |  | 27.9d |
| SDR-2-PRO-PO-E-1190 |  | CCTV System,Servers & WorkStations PO | 13d | 2026-04-26 A | 2026-10-05 | SDR-2-PRO-MAL-E-1150, SDR-2-MILS-1000 FS+137d |  | 78d |
| SDR-2-PRO-PO-E-1200 |  | Professional 55" Video wall at control room PO | 13d | 2026-04-26 A | 2026-10-05 | SDR-2-PRO-MAL-E-1160, SDR-2-MILS-1000 FS+149d |  | 51d |
| SDR-2-PRO-PO-E-1210 |  | CCTV Switches PO | 13d | 2026-04-26 A | 2026-10-05 | SDR-2-PRO-MAL-E-1170, SDR-2-MILS-1000 FS+161d |  | 78d |
| SDR-2-PRO-PO-E-1220 |  | CCTV Wireless P2P bridges PO | 13d | 2026-04-26 A | 2026-10-05 | SDR-2-PRO-MAL-E-1180, SDR-2-MILS-1000 FS+169d |  | 78d |
| SDR-2-PRO-PO-E-1230 |  | CCTV UPS PO | 13d | 2026-04-26 A | 2026-10-05 | SDR-2-PRO-MAL-E-1190, SDR-2-MILS-1000 FS+176d |  | 46d |
| SDR-2-PRO-PO-E-1240 |  | CCTV Solar System PO | 13d | 2026-04-26 A | 2026-10-05 | SDR-2-PRO-MAL-E-1200, SDR-2-MILS-1000 FS+189d |  | 75d |
| SDR-2-PRO-PO-E-1110 |  | Lighting Panels PO | 13d | 2026-04-29 A | 2026-08-05 A | SDR-2-PRO-MAL-E-1080, SDR-2-MILS-1000 FS+99d | 100% |  |
| SDR-2-PRO-PO-E-1030 |  | Street Lighting Poles PO | 13d | 2026-04-30 A | 2026-06-02 A | SDR-2-PRO-MAL-E-1020, SDR-2-MILS-1000 FS+80d | 100% |  |
| SDR-2-PRO-PO-E-1040 |  | Street Lighting Fixtures PO | 13d | 2026-04-30 A | 2026-08-01 A | SDR-2-PRO-MAL-E-1030, SDR-2-MILS-1000 FS+92d | 100% |  |
| SDR-2-PRO-PO-E-1050 |  | DrawPits for Lighting PO | 15d | 2026-04-30 A | 2026-09-07 A | SDR-2-PRO-MAL-E-1040, SDR-2-MILS-1000 FS+104d | 100% |  |
| SDR-2-PRO-PO-E-1120 |  | KWH Meter with mounting frame PO | 13d | 2026-05-02 A | 2026-10-05 | SDR-2-PRO-MAL-E-1090, SDR-2-MILS-1000 FS+99d |  | 8d |
| SDR-2-PRO-PO-E-1140 |  | PECD Ducts for CCTV network PO | 14d | 2026-05-06 A | 2026-10-05 | SDR-2-PRO-MAS-E-1030, SDR-2-MILS-1000 FS+111d |  | 15d |
| SDR-2-PRO-PO-E-1180 |  | Racks and Patch panels PO | 13d | 2026-06-15 A | 2026-10-05 | SDR-2-PRO-MAL-E-1140, SDR-2-MILS-1000 FS+125d |  | 72d |
| SDR-2-PRO-PO-E-1130 |  | Main Feeder Pillar PO | 13d | 2026-08-16 A | 2026-10-05 | SDR-2-PRO-MAL-E-1100, SDR-2-MILS-1000 FS+99d |  | 17d |
|  | 1 | **Delivery to Site** |  | 2026-03-14 | 2027-01-20 |  |  |  |
|  | 2 | **Short Lead Items Delivery** |  | 2026-04-19 | 2027-01-20 |  |  |  |
|  | 1 | **Civil** |  | 2026-04-19 | 2027-01-20 |  |  |  |
| SDR-2-PRO-DES-C-1070 |  | Construction material Delivery | 110d | 2026-04-19 A | 2026-07-20 A | SDR-2-PRO-PO-C-1070 FS+20d | 100% |  |
| SDR-2-PRO-DES-C-1000 |  | Earth works material Delivery | 50d | 2026-05-31 A | 2026-07-20 A | SDR-2-PRO-PO-C-1000 FS+14d | 100% |  |
| SDR-2-PRO-DES-C-1010 |  | Ready mix concrete Delivery | 118d | 2026-06-15 A | 2026-06-22 A | SDR-2-PRO-PO-C-1010 FS+30d | 100% |  |
| SDR-2-PRO-DES-C-1020 |  | Asphalt Mix Delivery | 98d | 2026-09-01 A | 2026-12-22 | SDR-2-PRO-PO-C-1020 FF |  | 4.1d |
| SDR-2-PRO-DES-C-1030 |  | Kerbstone Delivery | 60d | 2026-09-01 A | 2026-11-14 | SDR-2-PRO-PO-C-1030 FF |  | 0d |
| SDR-2-PRO-DES-C-1050 |  | Interlock Tiles Delivery | 40d | 2026-09-01 A | 2026-10-25 | SDR-2-PRO-PO-C-1050 FF |  | 87.1d |
| SDR-2-PRO-DES-C-1090 |  | Protection Bollards for CCTV Pole Delivery | 17d | 2026-10-06 | 2026-10-22 | SDR-2-PRO-PO-C-1090 |  | 110d |
| SDR-2-PRO-DES-C-1100 |  | Protection (Guard rail) for Fire hydrant Delivery | 60d | 2026-10-20 | 2026-12-18 | SDR-2-PRO-PO-C-1100 FS+12d |  | 1d |
| SDR-2-PRO-DES-C-1040 |  | Road Marking Delivery | 90d | 2026-10-23 | 2027-01-20 | SDR-2-PRO-PO-C-1040 FS+15d |  | 4d |
| SDR-2-PRO-DES-C-1080 |  | Fence for Electrical works Delivery | 29d | 2026-10-25 | 2026-11-22 | SDR-2-PRO-PO-C-1080 FS+16d |  | 49d |
| SDR-2-PRO-DES-C-1060 |  | Traffic Signage Manufacture and Delivery | 20d | 2026-10-30 | 2026-11-18 | SDR-2-PRO-PO-C-1060 FS+21d |  | 15d |
|  | 3 | **Electrical** |  | 2026-04-20 | 2026-10-07 |  |  |  |
| SDR-2-PRO-DES-E-1000 |  | UPVC Ducts & HDPE Ducts for Telecom network M Delivery | 35d | 2026-04-20 A | 2026-07-01 A | SDR-2-PRO-PO-E-1060 FS+19d | 100% |  |
| SDR-2-PRO-DES-E-1010 |  | Grounding System Delivery | 37d | 2026-06-02 A | 2026-07-01 A | SDR-2-PRO-PO-E-1080 FS+12d | 100% |  |
| SDR-2-PRO-DES-E-1020 |  | PECD Ducts for CCTV network Delivery | 37d | 2026-08-17 A | 2026-10-07 | SDR-2-PRO-PO-E-1140 FF |  | 16d |
|  | 5 | **Long Lead Items Delivery** |  | 2026-03-14 | 2026-12-13 |  |  |  |
|  | 3 | **Electrical** |  | 2026-03-14 | 2026-12-13 |  |  |  |
| SDR-2-PRO-DEL-E-1000 |  | MV Cables Delivery | 70d | 2026-03-14 A | 2026-09-10 A | SDR-2-PRO-PO-E-1000 FS+24d | 100% |  |
| SDR-2-PRO-DEL-E-1060 |  | Switchgears - (RMUs) Delivery | 50d | 2026-05-10 A | 2026-05-18 A | SDR-2-PRO-PO-E-1090 FS+8d | 100% |  |
| SDR-2-PRO-DEL-E-1010 |  | LV Cables Delivery | 70d | 2026-06-27 A | 2026-09-17 A | SDR-2-PRO-PO-E-1020 FS+22d | 100% |  |
| SDR-2-PRO-DEL-E-1050 |  | Concrete Manholes & DrawPits for Telecom Network Delivery | 65d | 2026-07-21 A | 2026-08-24 A | SDR-2-PRO-PO-E-1070 FS+28d | 100% |  |
| SDR-2-PRO-DEL-E-1210 |  | Termination Kits & Joints Delivery | 60d | 2026-08-24 A | 2026-09-14 A | SDR-2-PRO-PO-E-1010 FS+30d | 100% |  |
| SDR-2-PRO-DEL-E-1110 |  | CCTV Poles including all hardwares Delivery | 65d | 2026-08-24 A | 2026-11-11 | SDR-2-PRO-PO-E-1150 FF |  | 47.1d |
| SDR-2-PRO-DEL-E-1120 |  | CCTV Cables "Power" Delivery | 65d | 2026-08-24 A | 2026-11-11 | SDR-2-PRO-PO-E-1160 FF |  | 47.1d |
| SDR-2-PRO-DEL-E-1130 |  | CCTV Cables "CAT6" Delivery | 45d | 2026-08-24 A | 2026-10-22 | SDR-2-PRO-PO-E-1170 FF |  | 16d |
| SDR-2-PRO-DEL-E-1140 |  | Racks and Patch panels Delivery | 50d | 2026-08-24 A | 2026-10-27 | SDR-2-PRO-PO-E-1180 FF |  | 62.1d |
| SDR-2-PRO-DEL-E-1150 |  | CCTV System,Servers & WorkStations Delivery | 50d | 2026-08-24 A | 2026-10-27 | SDR-2-PRO-PO-E-1190 FF |  | 69.1d |
| SDR-2-PRO-DEL-E-1160 |  | Professional 55" Video wall at control room Delivery | 50d | 2026-08-24 A | 2026-10-27 | SDR-2-PRO-PO-E-1200 FF |  | 37.1d |
| SDR-2-PRO-DEL-E-1170 |  | CCTV Switches Delivery | 50d | 2026-08-24 A | 2026-10-27 | SDR-2-PRO-PO-E-1210 FF |  | 69.1d |
| SDR-2-PRO-DEL-E-1180 |  | CCTV Wireless P2P bridges Delivery | 50d | 2026-08-24 A | 2026-10-27 | SDR-2-PRO-PO-E-1220 FF |  | 69.1d |

| ID | WBS | Task | Duration | Start | Finish | Predecessors | Complete | Total float |
| --- | --- | --- | --- | --- | --- | --- | --- | --- |
| SDR-2-PRO-DEL-E-1190 |  | CCTV UPS Delivery | 50d | 2026-08-24 A | 2026-10-27 | SDR-2-PRO-PO-E-1230 FF |  | 32.1d |
| SDR-2-PRO-DEL-E-1200 |  | CCTV Solar System Delivery | 55d | 2026-08-24 A | 2026-11-01 | SDR-2-PRO-PO-E-1240 FF |  | 61.1d |
| SDR-2-PRO-DEL-E-1040 |  | DrawPits for Lighting Delivery | 40d | 2026-09-07 A | 2026-09-14 A | SDR-2-PRO-PO-E-1050 FS+12d | 100% |  |
| SDR-2-PRO-DEL-E-1020 |  | Street Lighting Poles Delivery | 70d | 2026-10-05 | 2026-12-13 | SDR-2-PRO-PO-E-1030 FS+22d |  | 9d |
| SDR-2-PRO-DEL-E-1030 |  | Street Lighting Fixtures Delivery | 70d | 2026-10-05 | 2026-12-13 | SDR-2-PRO-PO-E-1040 FS+9d |  | 9d |
| SDR-2-PRO-DEL-E-1080 |  | Lighting Panels Delivery | 65d | 2026-10-05 | 2026-12-08 | SDR-2-PRO-PO-E-1110 FS+20d |  | 20d |
| SDR-2-PRO-DEL-E-1070 |  | Unit Substation Delivery | 65d | 2026-10-06 | 2026-12-09 | SDR-2-PRO-PO-E-1100 |  | 13d |
| SDR-2-PRO-DEL-E-1090 |  | KWH Meter with mounting frame Delivery | 50d | 2026-10-06 | 2026-11-24 | SDR-2-PRO-PO-E-1120 |  | 9d |
| SDR-2-PRO-DEL-E-1100 |  | Main Feeder Pillar Manufacture and Delivery | 50d | 2026-10-20 | 2026-12-08 | SDR-2-PRO-PO-E-1130 FS+12d |  | 20d |
|  | 2 | **Mechanical** |  | 2026-03-16 | 2026-10-05 |  |  |  |
| SDR-2-PRO-DEL-M-1000 |  | GRP Pipes & UPVC Pipes &Fittings Delivery | 48d | 2026-03-16 A | 2026-07-13 A | SDR-2-PRO-PO-M-1000 FS+25d | 100% |  |
| SDR-2-PRO-DEL-M-1010 |  | HDPE Pipes & Fittings Delivery | 40d | 2026-03-16 A | 2026-07-13 A | SDR-2-PRO-PO-M-1010 FS+21d | 100% |  |
| SDR-2-PRO-DEL-M-1030 |  | Manhole Delivery | 48d | 2026-05-12 A | 2026-10-05 | SDR-2-PRO-PO-M-1030 FS+27d |  | 50d |
| SDR-2-PRO-DEL-M-1050 |  | Manhole, Catch basin and Valve box Cover Delivery | 40d | 2026-05-12 A | 2026-10-05 | SDR-2-PRO-PO-M-1050 FS+8d |  | 50d |
| SDR-2-PRO-DEL-M-1060 |  | Fire Hydrant Delivery | 75d | 2026-06-03 A | 2026-10-05 | SDR-2-PRO-PO-M-1060 FS+2d |  | 84d |
| SDR-2-PRO-DEL-M-1070 |  | Valve of Fire Hydrant Delivery | 75d | 2026-06-03 A | 2026-10-05 | SDR-2-PRO-PO-M-1070 FS+2d |  | 84d |
| SDR-2-PRO-DEL-M-1020 |  | Valves Delivery | 100d | 2026-06-03 A | 2026-10-05 | SDR-2-PRO-PO-M-1020 FS+20d |  | 59d |
| SDR-2-PRO-DEL-M-1040 |  | Catch Basin Delivery | 50d | 2026-06-17 A | 2026-10-05 | SDR-2-PRO-PO-M-1040 FS+10d |  | 0d |
|  | 4 | **Materials Staging Time** |  | 2026-03-17 | 2027-01-24 |  |  |  |
|  | 1 | **Civil** |  | 2026-04-21 | 2027-01-24 |  |  |  |
| SDR-2-PRO-ST-C-1070 |  | Construction material staging | 4d | 2026-04-21 A | 2026-07-21 A | SDR-2-PRO-DES-C-1070 SS+40d | 100% |  |
| SDR-2-PRO-ST-C-1000 |  | Earth works material staging | 4d | 2026-06-01 A | 2026-07-21 A | SDR-2-PRO-DES-C-1000 SS | 100% |  |
| SDR-2-PRO-ST-C-1010 |  | Ready mix concrete staging | 4d | 2026-07-01 A | 2026-07-04 A | SDR-2-PRO-DES-C-1000 SS | 100% |  |
| SDR-2-PRO-ST-C-1030 |  | Kerbstone staging | 4d | 2026-09-16 A | 2026-11-14 | SDR-2-PRO-DES-C-1030 FF |  | 50.1d |
| SDR-2-PRO-ST-C-1050 |  | Interlock Tiles staging | 4d | 2026-10-25 | 2026-10-29 | SDR-2-PRO-DES-C-1050 |  | 87.1d |
| SDR-2-PRO-ST-C-1090 |  | Protection Bollards for CCTV Pole staging | 4d | 2026-10-27 | 2026-10-30 | SDR-2-PRO-DES-C-1090 FS+4d |  | 110d |
| SDR-2-PRO-ST-C-1060 |  | Traffic Signage staging | 4d | 2026-11-19 | 2026-11-22 | SDR-2-PRO-DES-C-1060 |  | 120d |
| SDR-2-PRO-ST-C-1080 |  | Fence for Electrical works staging | 4d | 2026-11-23 | 2026-11-26 | SDR-2-PRO-DES-C-1080 |  | 49d |
| SDR-2-PRO-ST-C-1100 |  | Protection (Guard rail) for Fire hydrant staging | 4d | 2026-12-19 | 2026-12-22 | SDR-2-PRO-DES-C-1100 |  | 1d |
| SDR-2-PRO-ST-C-1020 |  | Asphalt Mix staging | 0d | 2026-12-22 | 2026-12-22 | SDR-2-PRO-DES-C-1020 FF |  | 4.1d |
| SDR-2-PRO-ST-C-1040 |  | Road Marking staging | 4d | 2027-01-21 | 2027-01-24 | SDR-2-PRO-DES-C-1040 |  | 24d |
|  | 2 | **Mechanical** |  | 2026-03-21 | 2026-10-05 |  |  |  |
| SDR-2-PRO-ST-M-1000 |  | GRP Pipes & Fittings staging | 10d | 2026-03-21 A | 2026-07-21 A | SDR-2-PRO-DEL-M-1000 | 100% |  |
| SDR-2-PRO-ST-M-1010 |  | HDPE Pipes & Fittings staging | 10d | 2026-03-21 A | 2026-07-21 A | SDR-2-PRO-DEL-M-1010 | 100% |  |
| SDR-2-PRO-ST-M-1050 |  | Manhole, Catch basin and Valve box Cover staging | 10d | 2026-05-13 A | 2026-10-05 | SDR-2-PRO-DEL-M-1050 FF |  | 59d |
| SDR-2-PRO-ST-M-1030 |  | Manhole staging | 10d | 2026-05-13 A | 2026-10-05 | SDR-2-PRO-DEL-M-1030 FF |  | 209d |
| SDR-2-PRO-ST-M-1020 |  | Valves staging | 10d | 2026-06-15 A | 2026-10-05 | SDR-2-PRO-DEL-M-1020 FF |  | 83d |
| SDR-2-PRO-ST-M-1060 |  | Fire Hydrant staging | 10d | 2026-06-18 A | 2026-10-05 | SDR-2-PRO-DEL-M-1060 FF |  | 127d |
| SDR-2-PRO-ST-M-1070 |  | Valve of Fire Hydrant staging | 10d | 2026-06-18 A | 2026-10-05 | SDR-2-PRO-DEL-M-1070 FF |  | 127d |
| SDR-2-PRO-ST-M-1040 |  | Catch Basin staging | 10d | 2026-06-18 A | 2026-10-05 | SDR-2-PRO-DEL-M-1040 FF |  | 124d |
|  | 3 | **Electrical** |  | 2026-03-17 | 2026-12-04 |  |  |  |
| SDR-2-PRO-ST-E-1000 |  | MV Cables staging | 10d | 2026-03-17 A | 2026-10-05 | SDR-2-PRO-DEL-E-1000 |  | 35d |
| SDR-2-PRO-ST-E-1090 |  | Switchgears - (RMUs) staging | 10d | 2026-05-17 A | 2026-06-01 A | SDR-2-PRO-DEL-E-1060 | 100% |  |
| SDR-2-PRO-ST-E-1060 |  | UPVC Ducts & HDPE Ducts for Telecom network staging | 10d | 2026-06-01 A | 2026-07-21 A | SDR-2-PRO-DES-E-1000 | 100% |  |
| SDR-2-PRO-ST-E-1080 |  | Grounding System staging | 10d | 2026-06-03 A | 2026-07-21 A | SDR-2-PRO-DES-E-1010 | 100% |  |
| SDR-2-PRO-ST-E-1020 |  | LV Cables staging | 10d | 2026-07-20 A | 2026-10-05 | SDR-2-PRO-DEL-E-1010 FS+3d |  | 47d |
| SDR-2-PRO-ST-E-1070 |  | Concrete Manholes & DrawPits for Telecom Network staging | 10d | 2026-07-27 A | 2026-10-05 | SDR-2-PRO-DEL-E-1050 |  | 59d |
| SDR-2-PRO-ST-E-1050 |  | DrawPits for Lighting staging | 10d | 2026-08-20 A | 2026-09-07 A | SDR-2-PRO-DEL-E-1040 | 100% |  |
| SDR-2-PRO-ST-E-1010 |  | Termination Kits & Joints staging | 10d | 2026-10-05 | 2026-10-14 | SDR-2-PRO-DEL-E-1210 |  | 26d |
| SDR-2-PRO-ST-E-1030 |  | Street Lighting Poles staging | 10d | 2026-10-05 | 2026-10-14 | SDR-2-PRO-DEL-E-1020 SS |  | 38d |
| SDR-2-PRO-ST-E-1040 |  | Street Lighting Fixtures staging | 10d | 2026-10-05 | 2026-10-14 | SDR-2-PRO-DEL-E-1030 SS |  | 38d |
| SDR-2-PRO-ST-E-1110 |  | Lighting Panels staging | 10d | 2026-10-05 | 2026-10-14 | SDR-2-PRO-DEL-E-1080 SS |  | 59d |
| SDR-2-PRO-ST-E-1100 |  | Unit Substation staging | 10d | 2026-10-06 | 2026-10-15 | SDR-2-PRO-DEL-E-1070 SS |  | 60d |
| SDR-2-PRO-ST-E-1140 |  | PECD Ducts for CCTV network staging | 10d | 2026-10-07 | 2026-10-17 | SDR-2-PRO-DES-E-1020 |  | 72.1d |
| SDR-2-PRO-ST-E-1130 |  | Main Feeder Pillar staging | 10d | 2026-10-22 | 2026-10-31 | SDR-2-PRO-DEL-E-1100 SS+2d |  | 42d |
| SDR-2-PRO-ST-E-1170 |  | CCTV Cables "CAT6" staging | 10d | 2026-10-22 | 2026-11-01 | SDR-2-PRO-DEL-E-1130 |  | 57.1d |
| SDR-2-PRO-ST-E-1180 |  | Racks and Patch panels staging | 10d | 2026-10-27 | 2026-11-06 | SDR-2-PRO-DEL-E-1140 |  | 69.1d |
| SDR-2-PRO-ST-E-1190 |  | CCTV System,Servers & WorkStations staging | 10d | 2026-10-27 | 2026-11-06 | SDR-2-PRO-DEL-E-1150 |  | 69.1d |
| SDR-2-PRO-ST-E-1200 |  | Professional 55" Video wall at control room staging | 10d | 2026-10-27 | 2026-11-06 | SDR-2-PRO-DEL-E-1160 |  | 37.1d |
| SDR-2-PRO-ST-E-1210 |  | CCTV Switches staging | 10d | 2026-10-27 | 2026-11-06 | SDR-2-PRO-DEL-E-1170 |  | 69.1d |
| SDR-2-PRO-ST-E-1220 |  | CCTV Wireless P2P bridges staging | 10d | 2026-10-27 | 2026-11-06 | SDR-2-PRO-DEL-E-1180 |  | 69.1d |
| SDR-2-PRO-ST-E-1230 |  | CCTV UPS staging | 10d | 2026-10-27 | 2026-11-06 | SDR-2-PRO-DEL-E-1190 |  | 69.1d |
| SDR-2-PRO-ST-E-1240 |  | CCTV Solar System staging | 10d | 2026-11-01 | 2026-11-11 | SDR-2-PRO-DEL-E-1200 |  | 77.1d |
| SDR-2-PRO-ST-E-1150 |  | CCTV Poles including all hardwares staging | 10d | 2026-11-11 | 2026-11-21 | SDR-2-PRO-DEL-E-1110 |  | 54.1d |
| SDR-2-PRO-ST-E-1160 |  | CCTV Cables "Power" staging | 10d | 2026-11-11 | 2026-11-21 | SDR-2-PRO-DEL-E-1120 |  | 54.1d |
| SDR-2-PRO-ST-E-1120 |  | KWH Meter with mounting frame staging | 10d | 2026-11-25 | 2026-12-04 | SDR-2-PRO-DEL-E-1090 |  | 9d |
|  | CON | **Construction** |  | 2026-02-06 | 2027-07-05 |  |  |  |
|  | RO | **ROAD WORKS** |  | 2026-02-06 | 2027-04-19 |  |  |  |
|  | ZA | **ZONE A** |  | 2026-02-06 | 2027-04-19 |  |  |  |
|  | 14 | **GENERAL WORKS** |  | 2026-02-06 | 2026-03-16 |  |  |  |

| ID | WBS | Task | Duration | Start | Finish | Predecessors | Complete | Total float |
| --- | --- | --- | --- | --- | --- | --- | --- | --- |
|  | 10 | **Cleaning and removal of organic materials in Zone A** |  | 2026-02-06 | 2026-03-06 |  |  |  |
| SDR-2-CON-RW-ZA-1000 |  | Cleaning and removal of organic materials in Zone A | 16d | 2026-02-06 A | 2026-03-06 A | SDR-2-MOBL-1060 | 100% |  |
|  | 12 | **Surveying works Zone A** |  | 2026-03-06 | 2026-03-16 |  |  |  |
| SDR-2-CON-RW-ZA-1010 |  | Surveying works Zone A | 16d | 2026-03-06 A | 2026-03-16 A | SDR-2-ENG-APP-M-1010 SS, SDR-2-PREL-1100, SDR-2-CON-RW-ZA-1000, SDR-2-PRO-MAS-C-1030 SS, SDR-2-PRO-MAS-C-1060 SS, SDR-2-PRO-MAL-E-1150, SDR-2-PRO-MAL-E-1140, SDR-2-PRO-MAL-E-1130, SDR-2-PRO-MAL-E-1120, SDR-2-PRO-MAL-E-1110, SDR-2-PRO-MAL-E-1000, SDR-2-PRO-MAL-E-1010, SDR-2-PRO-MAL-E-1020, SDR-2-PRO-MAL-E-1030, SDR-2-PRO-MAL-E-1040, SDR-2-PRO-MAL-E-1050, SDR-2-PRO-MAL-E-1180, SDR-2-PRO-MAL-E-1060, SDR-2-PRO-MAL-E-1070, SDR-2-PRO-MAL-E-1080, SDR-2-PRO-MAL-E-1090, SDR-2-PRO-MAL-E-1100, SDR-2-PRO-MAL-E-1190, SDR-2-PRO-MAL-M-1000, SDR-2-PRO-MAL-M-1010, SDR-2-PRO-MAL-M-1020, SDR-2-PRO-MAL-M-1030, SDR-2-PRO-MAL-M-1040, SDR-2-PRO-MAL-M-1050, SDR-2-PRO-MAL-M-1060, SDR-2-PRO-MAL-M-1070, SDR-2-PRO-MAS-E-1000, SDR-2-PRO-MAS-E-1010, SDR-2-PRO-MAS-E-1020, SDR-2-PRO-MAS-E-1030, SDR-2-PRO-MAS-C-1000, SDR-2-PRO-MAS-C-1010, SDR-2-PRO-MAS-C-1040, SDR-2-PRO-MAS-C-1020, SDR-2-PRO-MAS-C-1050, SDR-2-PRO-MAS-C-1070, SDR-2-PRO-MAS-C-1090, SDR-2-PRO-MAS-C-1100, SDR-2-PRO-MAS-C-1080 | 100% |  |
|  | 1 | **ROAD WORKS IN ( PH2-COL-MC10 )** |  | 2026-03-23 | 2027-04-17 |  |  |  |
|  | 1 | **Earth Works Road** |  | 2026-03-23 | 2026-05-07 |  |  |  |
| SDR-2-CON-RW-ZA-1020 |  | Roadway Excavation and cuttings | 20d | 2026-03-23 A | 2026-05-07 A | SDR-2-CON-RW-ZA-1010 FS+11d, SDR-2-PRO-ST-C-1000 FF | 100% |  |
|  | 10 | **Backfilling Works** |  | 2026-04-07 | 2026-06-12 |  |  |  |
| SDR-2-CON-RW-ZA-2860 |  | Embankments to the Road 1 Layer | 21d | 2026-04-07 A | 2026-04-30 A | SDR-2-CON-RW-ZA-1020 | 100% |  |
| SDR-2-CON-RW-ZA-2870 |  | Embankments to the Road 2 Layer | 21d | 2026-05-16 A | 2026-05-23 A | SDR-2-CON-RW-ZA-2860 | 100% |  |
| SDR-2-CON-RW-ZA-2880 |  | Embankments to the Road 3 Layer | 21d | 2026-05-23 A | 2026-06-04 A | SDR-2-CON-RW-ZA-2870, SDR-2-PRO-DES-E-1010, SDR-2-PRO-DES-E-1010 FF | 100% |  |
| SDR-2-CON-RW-ZA-1030 |  | Embankments to the Road 4 Layer | 21d | 2026-06-04 A | 2026-06-12 A | SDR-2-CON-RW-ZA-2880 | 100% |  |
|  | 11 | **Subgrade** |  | 2026-08-11 | 2026-08-31 |  |  |  |
| SDR-2-CON-RW-ZA-1060 |  | Subgrade layer works | 21d | 2026-08-11 A | 2026-08-31 A | SDR-2-CON-RW-ZA-1030 | 100% |  |
|  | 9 | **Earth Works Plot** |  | 2026-05-16 | 2026-07-21 |  |  |  |
| SDR-2-CON-RW-ZA-1040 |  | Plot Excavation for cuttings (all types of soil) | 21d | 2026-05-16 A | 2026-05-31 A | SDR-2-CON-RW-ZA-1060, SDR-2-PRO-DES-C-1070, SDR-2-PRO-DES-C-1000 | 100% |  |
| SDR-2-CON-RW-ZA-2890 |  | Embankments to the Plot Layer 1 | 21d | 2026-05-23 A | 2026-06-04 A | SDR-2-CON-RW-ZA-1040 | 100% |  |
| SDR-2-CON-RW-ZA-2900 |  | Embankments to the Plot Layer 2 | 21d | 2026-06-15 A | 2026-07-05 A | SDR-2-CON-RW-ZA-2890 | 100% |  |
| SDR-2-CON-RW-ZA-1050 |  | Embankments to the Plot Layer 3 | 21d | 2026-07-14 A | 2026-07-21 A | SDR-2-CON-RW-ZA-2900 | 100% |  |
|  | 2 | **Base Course** |  | 2026-08-31 | 2026-10-01 |  |  |  |
| SDR-2-CON-RW-ZA-1070 |  | Aggregate base course layer | 21d | 2026-08-31 A | 2026-10-01 A | SDR-2-PRO-ST-C-1070, SDR-2-CON-RW-ZA-1060 | 100% |  |
|  | 8 | **Demolition Work** |  | 2026-10-05 | 2026-10-18 |  |  |  |
| SDR-2-CON-RW-ZA-1080 |  | Milling of wearing course | 12d | 2026-10-05 | 2026-10-18 | SDR-2-CON-RW-ZA-1070 |  | 59d |
|  | 3 | **Asphalt Works** |  | 2026-12-22 | 2027-01-27 |  |  |  |
| SDR-2-CON-RW-ZA-1090 |  | Asphalt works 2st Layer with RC-01 | 16d | 2026-12-22 | 2027-01-10 | SDR-2-PRO-DES-C-1020 FF, SDR-2-PRO-DES-C-1010, SDR-2-PRO-MAS-C-1020, SDR-2-CON-RW-ZA-1070, SDR-2-CON-RW-ZA-1080, SDR-2-PRO-ST-C-1020 |  | 3.1d |
| SDR-2-CON-RW-ZA-1100 |  | Asphalt works 3nd layer with RC-02 | 21d | 2027-01-03 | 2027-01-27 | SDR-2-PRO-DES-C-1020, SDR-2-CON-RW-ZA-1090 SS+10d |  | 3.1d |
|  | 4 | **Kerbstone Installation** |  | 2026-11-14 | 2027-02-14 |  |  |  |
| SDR-2-CON-RW-ZA-3400 |  | Kerbstone Installation "all Types" Part1 | 18d | 2026-11-14 | 2026-12-05 | SDR-2-CON-RW-ZA-1060, SDR-2-PRO-ST-C-1030 |  | 43.1d |
| SDR-2-CON-RW-ZA-1110 |  | Kerbstone Installation "all Types" Part2 | 21d | 2027-01-20 | 2027-02-14 | SDR-2-CON-CC-ZG-1610, SDR-2-CON-RW-ZA-1100 SS+15d, SDR-2-PRO-ST-C-1010, SDR-2-PRO-MAS-C-1010, SDR-2-PRO-MAS-C-1040, SDR-2-CON-RW-ZA-3400 |  | 3.1d |
|  | 5 | **Interlock Installation** |  | 2027-01-21 | 2027-02-14 |  |  |  |
| SDR-2-CON-RW-ZA-1120 |  | Interlock Installation | 21d | 2027-01-21 | 2027-02-14 | SDR-2-CON-RW-ZA-1110 SS, SDR-2-PRO-ST-C-1050, SDR-2-PRO-MAS-C-1050, SDR-2-PRO-DES-C-1040 |  | 3d |
|  | 6 | **Road Marking** |  | 2027-02-15 | 2027-03-24 |  |  |  |
| SDR-2-CON-RW-ZA-1130 |  | Retroreflective Thermoplastic White Traffic lines | 14d | 2027-02-15 | 2027-03-03 | SDR-2-CON-RW-ZA-1120, SDR-2-PRO-ST-C-1040, SDR-2-PRO-MAS-C-1030, SDR-2-CON-RW-ZA-1050 SS |  | 3d |
| SDR-2-CON-RW-ZA-1140 |  | Retroreflective Thermoplastic Yellow, Traffic lines | 14d | 2027-03-04 | 2027-03-24 | SDR-2-CON-RW-ZA-1130 |  | 3d |
|  | 7 | **Traffic Signage** |  | 2027-03-25 | 2027-04-17 |  |  |  |
| SDR-2-CON-RW-ZA-1150 |  | Single post-Traffic signs Installation | 20d | 2027-03-25 | 2027-04-17 | SDR-2-CON-RW-ZA-1050, SDR-2-CON-RW-ZA-1140, SDR-2-PRO-ST-C-1060, SDR-2-PRO-MAS-C-1060 |  | 3d |
|  | 8 | **ROAD WORKS IN ( PH2-COL-MC20 )** |  | 2026-04-07 | 2027-04-19 |  |  |  |
|  | 1 | **Earth Works Road** |  | 2026-04-25 | 2026-07-21 |  |  |  |
| SDR-2-CON-RW-ZA-1160 |  | Roadway Excavation and cuttings | 20d | 2026-04-25 A | 2026-07-21 A | SDR-2-CON-RW-ZA-1020 SS+4d | 100% |  |
|  | 10 | **Backfilling Works** |  | 2026-04-07 | 2026-06-13 |  |  |  |
| SDR-2-CON-RW-ZA-2910 |  | Embankments to the Road Layer 1 | 21d | 2026-04-07 A | 2026-05-23 A | SDR-2-CON-RW-ZA-1160, SDR-2-PRO-DES-E-1000 | 100% |  |
| SDR-2-CON-RW-ZA-2920 |  | Embankments to the Road Layer 2 | 21d | 2026-05-05 A | 2026-05-23 A | SDR-2-CON-RW-ZA-2910 | 100% |  |
| SDR-2-CON-RW-ZA-2930 |  | Embankments to the Road Layer 3 | 21d | 2026-05-23 A | 2026-06-03 A | SDR-2-CON-RW-ZA-2920 | 100% |  |
| SDR-2-CON-RW-ZA-1170 |  | Embankments to the Road Layer 4 | 21d | 2026-06-04 A | 2026-06-13 A | SDR-2-CON-RW-ZA-2930 FS+1d | 100% |  |
|  | 11 | **Subgrade** |  | 2026-09-03 | 2026-09-24 |  |  |  |
| SDR-2-CON-RW-ZA-1180 |  | Subgrade layer works | 21d | 2026-09-03 A | 2026-09-24 A | SDR-2-CON-RW-ZA-1170 | 100% |  |
|  | 9 | **Earth Works Plot** |  | 2026-06-08 | 2026-07-26 |  |  |  |
| SDR-2-CON-RW-ZA-2940 |  | Embankments to the Plot 1 Layer | 21d | 2026-06-08 A | 2026-06-15 A | SDR-2-CON-RW-ZA-1170, SDR-2-CON-RW-ZA-1190 | 100% |  |
| SDR-2-CON-RW-ZA-2950 |  | Embankments to the Plot 2 Layer | 21d | 2026-06-15 A | 2026-06-27 A | SDR-2-CON-RW-ZA-2940 | 100% |  |
| SDR-2-CON-RW-ZA-1200 |  | Embankments to the Plot 3 Layer | 21d | 2026-07-04 A | 2026-07-14 A | SDR-2-CON-RW-ZA-2950 | 100% |  |
| SDR-2-CON-RW-ZA-1190 |  | Plot Excavation for cuttings (all types of soil) | 21d | 2026-07-14 A | 2026-07-26 A | SDR-2-CON-RW-ZA-1160, SDR-2-CON-RW-ZA-1180 SS | 100% |  |
|  | 2 | **Base Course** |  | 2026-09-26 | 2026-10-26 |  |  |  |
| SDR-2-CON-RW-ZA-1210 |  | Aggregate base course layer | 19d | 2026-09-26 A | 2026-10-26 | SDR-2-CON-RW-ZA-1180 | 70% | 16d |
|  | 8 | **Demolition Work** |  | 2026-10-27 | 2026-11-02 |  |  |  |
| SDR-2-CON-RW-ZA-1220 |  | Milling of wearing course | 6d | 2026-10-27 | 2026-11-02 | SDR-2-CON-RW-ZA-1210 |  | 16d |
|  | 3 | **Asphalt Works** |  | 2026-11-03 | 2026-12-26 |  |  |  |
| SDR-2-CON-RW-ZA-1230 |  | Asphalt works 1st Layer with MC-01 | 9d | 2026-11-03 | 2026-11-12 | SDR-2-CON-RW-ZA-1210, SDR-2-CON-RW-ZA-1220 |  | 16d |
| SDR-2-CON-RW-ZA-1240 |  | Asphalt works 2nd layer with RC-01 | 18d | 2026-11-14 | 2026-12-03 | SDR-2-CON-RW-ZA-1230 |  | 16d |
| SDR-2-CON-RW-ZA-2840 |  | Asphalt Works 3 rd Layer with RC-02 | 19d | 2026-12-05 | 2026-12-26 | SDR-2-CON-RW-ZA-1240 |  | 16d |
|  | 4 | **Kerbstone Installation** |  | 2026-12-23 | 2027-02-06 |  |  |  |
| SDR-2-CON-RW-ZA-3410 |  | Kerbstone Installation "all Types" Part 1 | 18d | 2026-12-23 | 2027-01-12 | SDR-2-CON-RW-ZA-1180, SDR-2-PRO-ST-C-1100 |  | 1d |
| SDR-2-CON-RW-ZA-1250 |  | Kerbstone Installation "all Types" Part 2 | 21d | 2027-01-13 | 2027-02-06 | SDR-2-CON-RW-ZA-2840, SDR-2-CON-RW-ZA-3410 |  | 1d |
|  | 5 | **Interlock Installation** |  | 2027-02-07 | 2027-03-03 |  |  |  |
| SDR-2-CON-RW-ZA-1260 |  | Interlock Installation | 21d | 2027-02-07 | 2027-03-03 | SDR-2-CON-RW-ZA-1250 |  | 1d |
|  | 6 | **Road Marking** |  | 2027-03-04 | 2027-03-29 |  |  |  |
| SDR-2-CON-RW-ZA-1270 |  | Retroreflective Thermoplastic White Traffic lines | 11d | 2027-03-04 | 2027-03-21 | SDR-2-CON-RW-ZA-1260 |  | 1d |
| SDR-2-CON-RW-ZA-1280 |  | Retroreflective Thermoplastic Yellow, Traffic lines | 7d | 2027-03-22 | 2027-03-29 | SDR-2-CON-RW-ZA-1270 |  | 1d |
|  | 7 | **Traffic Signage** |  | 2027-03-30 | 2027-04-19 |  |  |  |
| SDR-2-CON-RW-ZA-1290 |  | Single post-Traffic signs Installation | 18d | 2027-03-30 | 2027-04-19 | SDR-2-CON-RW-ZA-1280 |  | 1d |
|  | 13 | **ROAD WORKS IN ( PH2-A-MCI0 )** |  | 2026-04-28 | 2027-04-15 |  |  |  |

| ID | WBS | Task | Duration | Start | Finish | Predecessors | Complete | Total float |
| --- | --- | --- | --- | --- | --- | --- | --- | --- |
|  | 1 | **Earth Works Road** |  | 2026-04-28 | 2026-05-20 |  |  |  |
| SDR-2-CON-RW-ZA-1300 |  | Roadway Excavation and cuttings | 20d | 2026-04-28 A | 2026-05-20 A | SDR-2-CON-RW-ZA-1160 SS+4d | 100% |  |
|  | 10 | **Backfilling Works** |  | 2026-04-29 | 2026-06-14 |  |  |  |
| SDR-2-CON-RW-ZA-2960 |  | Embankments to the Road 1 Layer | 21d | 2026-04-29 A | 2026-05-07 A | SDR-2-CON-RW-ZA-1300 | 100% |  |
| SDR-2-CON-RW-ZA-2970 |  | Embankments to the Road 2 Layer | 21d | 2026-05-07 A | 2026-05-14 A | SDR-2-CON-RW-ZA-2960 | 100% |  |
| SDR-2-CON-RW-ZA-2980 |  | Embankments to the Road 3 Layer | 21d | 2026-06-01 A | 2026-06-09 A | SDR-2-CON-RW-ZA-2970 FS+1d | 100% |  |
| SDR-2-CON-RW-ZA-1310 |  | Embankments to the Road 4 Layer | 21d | 2026-06-09 A | 2026-06-14 A | SDR-2-CON-RW-ZA-2980 | 100% |  |
|  | 11 | **Subgrade** |  | 2026-10-05 | 2026-10-27 |  |  |  |
| SDR-2-CON-RW-ZA-1320 |  | Subgrade layer works | 20d | 2026-10-05 A | 2026-10-27 | SDR-2-CON-RW-ZA-1310 | 10% | 4d |
|  | 9 | **Earth Works Plot** |  | 2026-06-08 | 2026-07-20 |  |  |  |
| SDR-2-CON-RW-ZA-2990 |  | Embankments to the Plot 1 Layer | 21d | 2026-06-08 A | 2026-06-15 A | SDR-2-CON-RW-ZA-1310, SDR-2-CON-RW-ZA-1330 | 100% |  |
| SDR-2-CON-RW-ZA-1340 |  | Embankments to the Plot 2 Layer | 21d | 2026-06-15 A | 2026-06-27 A | SDR-2-CON-RW-ZA-2990 FS+4d | 100% |  |
| SDR-2-CON-RW-ZA-1330 |  | Plot Excavation for cuttings (all types of soil) | 21d | 2026-07-13 A | 2026-07-20 A | SDR-2-CON-RW-ZA-1300 | 100% |  |
|  | 2 | **Base Course** |  | 2026-10-28 | 2026-11-19 |  |  |  |
| SDR-2-CON-RW-ZA-1350 |  | Aggregate base course layer | 20d | 2026-10-28 | 2026-11-19 | SDR-2-CON-RW-ZA-1320 |  | 4d |
|  | 8 | **Demolition Work** |  | 2026-11-21 | 2026-11-25 |  |  |  |
| SDR-2-CON-RW-ZA-1360 |  | Milling of wearing course | 5d | 2026-11-21 | 2026-11-25 | SDR-2-CON-RW-ZA-1350, SDR-2-CON-RW-ZA-1190 |  | 4d |
|  | 3 | **Asphalt Works** |  | 2026-11-26 | 2026-12-26 |  |  |  |
| SDR-2-CON-RW-ZA-1370 |  | Asphalt works 1st Layer with MC-01 | 5d | 2026-11-26 | 2026-12-01 | SDR-2-CON-RW-ZA-1350, SDR-2-CON-RW-ZA-1360 |  | 4d |
| SDR-2-CON-RW-ZA-1380 |  | Asphalt works 2nd layer with RC-02 | 21d | 2026-12-02 | 2026-12-26 | SDR-2-CON-RW-ZA-1370 |  | 4d |
|  | 4 | **Kerbstone Installation** |  | 2026-10-14 | 2027-01-19 |  |  |  |
| SDR-2-CON-RW-ZA-3420 |  | Kerbstone Installation "all Types" Part 1 | 18d | 2026-10-14 | 2026-11-03 | SDR-2-CON-RW-ZA-1320 SS+8d |  | 6d |
| SDR-2-CON-RW-ZA-1390 |  | Kerbstone Installation "all Types" Part 2 | 21d | 2026-12-27 | 2027-01-19 | SDR-2-CON-RW-ZA-1380 |  | 4d |
|  | 5 | **Interlock Installation** |  | 2027-01-20 | 2027-02-13 |  |  |  |
| SDR-2-CON-RW-ZA-1400 |  | Interlock Installation | 21d | 2027-01-20 | 2027-02-13 | SDR-2-CON-RW-ZA-1390 |  | 4d |
|  | 6 | **Road Marking** |  | 2027-02-14 | 2027-03-23 |  |  |  |
| SDR-2-CON-RW-ZA-1410 |  | Retroreflective Thermoplastic White Traffic lines | 14d | 2027-02-14 | 2027-03-02 | SDR-2-CON-RW-ZA-1400 |  | 4d |
| SDR-2-CON-RW-ZA-1420 |  | Retroreflective Thermoplastic Yellow, Traffic lines | 14d | 2027-03-03 | 2027-03-23 | SDR-2-CON-RW-ZA-1410 |  | 4d |
|  | 7 | **Traffic Signage** |  | 2027-03-24 | 2027-04-15 |  |  |  |
| SDR-2-CON-RW-ZA-1430 |  | Single post-Traffic signs Installation | 20d | 2027-03-24 | 2027-04-15 | SDR-2-CON-RW-ZA-1420, SDR-2-CON-RW-ZA-1340, SDR-2-CON-RW-ZA-1200 |  | 4d |
|  | 2 | **ROAD WORKS IN ( PH2-A-MCA0 )** |  | 2026-04-22 | 2027-04-13 |  |  |  |
|  | 1 | **Earth Works Road** |  | 2026-04-22 | 2026-05-03 |  |  |  |
| SDR-2-CON-RW-ZA-1440 |  | Roadway Excavation and cuttings | 20d | 2026-04-22 A | 2026-05-03 A | SDR-2-CON-RW-ZA-1300 SS+4d | 100% |  |
|  | 10 | **Backfilling Works** |  | 2026-05-03 | 2026-06-06 |  |  |  |
| SDR-2-CON-RW-ZA-3000 |  | Embankments to the Road 1 Layer | 21d | 2026-05-03 A | 2026-05-10 A | SDR-2-CON-RW-ZA-1440 | 100% |  |
| SDR-2-CON-RW-ZA-3010 |  | Embankments to the Road 2 Layer | 21d | 2026-05-11 A | 2026-05-19 A | SDR-2-CON-RW-ZA-3000, SDR-2-PRO-DES-E-1010 | 100% |  |
| SDR-2-CON-RW-ZA-3020 |  | Embankments to the Road 3 Layer | 21d | 2026-05-19 A | 2026-05-24 A | SDR-2-CON-RW-ZA-3010 | 100% |  |
| SDR-2-CON-RW-ZA-1450 |  | Embankments to the Road 4 Layer | 21d | 2026-05-24 A | 2026-06-06 A | SDR-2-CON-RW-ZA-3000 SS, SDR-2-CON-RW-ZA-3020 FS+1d | 100% |  |
|  | 11 | **Subgrade** |  | 2026-09-01 | 2026-10-08 |  |  |  |
| SDR-2-CON-RW-ZA-1460 |  | Subgrade layer works | 21d | 2026-09-01 A | 2026-10-08 | SDR-2-CON-RW-ZA-1450 | 30% | 13d |
|  | 9 | **Earth Works Plot** |  | 2026-06-04 | 2026-11-02 |  |  |  |
| SDR-2-CON-RW-ZA-3030 |  | Embankments to the Plot 1 Layer | 21d | 2026-06-04 A | 2026-06-14 A | SDR-2-CON-RW-ZA-1330 | 100% |  |
| SDR-2-CON-RW-ZA-1480 |  | Embankments to the Plot 2 Layer | 21d | 2026-06-22 A | 2026-10-05 | SDR-2-CON-RW-ZA-3030 |  | 76d |
| SDR-2-CON-RW-ZA-1470 |  | Plot Excavation for cuttings (all types of soil) | 21d | 2026-09-30 A | 2026-11-02 | SDR-2-CON-RW-ZA-1440, SDR-2-CON-RW-ZA-1460 | 40% | 37d |
|  | 2 | **Base Course** |  | 2026-10-10 | 2026-10-26 |  |  |  |
| SDR-2-CON-RW-ZA-1490 |  | Aggregate base course layer | 15d | 2026-10-10 | 2026-10-26 | SDR-2-CON-RW-ZA-1460 |  | 13d |
|  | 8 | **Demolition Work** |  | 2026-11-04 | 2026-11-08 |  |  |  |
| SDR-2-CON-RW-ZA-1500 |  | Milling of wearing course | 4d | 2026-11-04 | 2026-11-08 | SDR-2-CON-RW-ZA-3420, SDR-2-CON-RW-ZA-1490 |  | 6d |
|  | 3 | **Asphalt Works** |  | 2026-11-09 | 2026-12-22 |  |  |  |
| SDR-2-CON-RW-ZA-1510 |  | Asphalt works 1st Layer with MC-01 | 18d | 2026-11-09 | 2026-11-29 | SDR-2-CON-RW-ZA-1490, SDR-2-CON-RW-ZA-1500 |  | 6d |
| SDR-2-CON-RW-ZA-1520 |  | Asphalt works 2nd layer with RC-02 | 20d | 2026-11-30 | 2026-12-22 | SDR-2-CON-RW-ZA-1510 |  | 6d |
|  | 4 | **Kerbstone Installation** |  | 2026-10-10 | 2027-01-16 |  |  |  |
| SDR-2-CON-RW-ZA-3440 |  | Kerbstone Installation "all Types" Part 1 | 21d | 2026-10-10 | 2026-11-02 | SDR-2-CON-RW-ZA-1460 |  | 49d |
| SDR-2-CON-RW-ZA-1530 |  | Kerbstone Installation "all Types" Part 2 | 21d | 2026-12-23 | 2027-01-16 | SDR-2-CON-RW-ZA-1520, SDR-2-CON-RW-ZA-3440 |  | 6d |
|  | 5 | **Interlock Installation** |  | 2027-01-17 | 2027-02-09 |  |  |  |
| SDR-2-CON-RW-ZA-1540 |  | Interlock Installation | 21d | 2027-01-17 | 2027-02-09 | SDR-2-CON-RW-ZA-1530 |  | 6d |
|  | 6 | **Road Marking** |  | 2027-02-10 | 2027-03-21 |  |  |  |
| SDR-2-CON-RW-ZA-1550 |  | Retroreflective Thermoplastic White Traffic lines | 14d | 2027-02-10 | 2027-02-27 | SDR-2-CON-SL-ZA-3490, SDR-2-CON-RW-ZA-1540 |  | 6d |
| SDR-2-CON-RW-ZA-1560 |  | Retroreflective Thermoplastic Yellow, Traffic lines | 15d | 2027-02-28 | 2027-03-21 | SDR-2-CON-RW-ZA-1550 |  | 6d |
|  | 7 | **Traffic Signage** |  | 2027-03-22 | 2027-04-13 |  |  |  |
| SDR-2-CON-RW-ZA-1570 |  | Single post-Traffic signs Installation | 20d | 2027-03-22 | 2027-04-13 | SDR-2-CON-RW-ZA-1480, SDR-2-CON-RW-ZA-1560 |  | 6d |
|  | 3 | **ROAD WORKS IN ( PH2-A-MCB0 )** |  | 2026-04-22 | 2027-03-30 |  |  |  |
|  | 1 | **Earth Works Road** |  | 2026-04-22 | 2026-05-24 |  |  |  |
| SDR-2-CON-RW-ZA-1580 |  | Roadway Excavation and cuttings | 20d | 2026-04-22 A | 2026-05-24 A | SDR-2-CON-RW-ZA-1440 SS+4d | 100% |  |
|  | 10 | **Backfilling Works** |  | 2026-04-28 | 2026-06-06 |  |  |  |
| SDR-2-CON-RW-ZA-3040 |  | Embankments to the Road 1 Layer | 21d | 2026-04-28 A | 2026-05-11 A | SDR-2-CON-RW-ZA-1580 FS+2d | 100% |  |
| SDR-2-CON-RW-ZA-3050 |  | Embankments to the Road 2 Layer | 21d | 2026-05-09 A | 2026-05-18 A | SDR-2-CON-RW-ZA-3040 | 100% |  |
| SDR-2-CON-RW-ZA-3060 |  | Embankments to the Road 3 Layer | 21d | 2026-05-16 A | 2026-05-24 A | SDR-2-CON-RW-ZA-3050 | 100% |  |
| SDR-2-CON-RW-ZA-1590 |  | Embankments to the Road 4 Layer | 21d | 2026-05-24 A | 2026-06-06 A | SDR-2-CON-RW-ZA-3060 FS+1d | 100% |  |
|  | 11 | **Subgrade** |  | 2026-09-01 | 2026-10-05 |  |  |  |

| ID | WBS | Task | Duration | Start | Finish | Predecessors | Complete | Total float |
| --- | --- | --- | --- | --- | --- | --- | --- | --- |
| SDR-2-CON-RW-ZA-1600 |  | Subgrade layer works | 16d | 2026-09-01 A | 2026-10-05 | SDR-2-CON-RW-ZA-1590 | 30% | 20d |
|  | 9 | **Earth Works Plot** |  | 2026-06-08 | 2026-10-05 |  |  |  |
| SDR-2-CON-RW-ZA-1610 |  | Plot Excavation for cuttings (all types of soil) | 21d | 2026-06-08 A | 2026-10-05 | SDR-2-CON-RW-ZA-1580, SDR-2-CON-RW-ZA-1600 FF | 85% | 43d |
| SDR-2-CON-RW-ZA-3070 |  | Embankments to the Plot 1 Layer | 21d | 2026-06-15 A | 2026-06-25 A | SDR-2-CON-RW-ZA-1610 SS | 100% |  |
| SDR-2-CON-RW-ZA-1620 |  | Embankments to the Plot 2 Layer | 21d | 2026-06-30 A | 2026-10-05 | SDR-2-CON-RW-ZA-3070 FS+1d | 20% | 146d |
|  | 8 | **Demolition Work** |  | 2026-10-29 | 2026-11-01 |  |  |  |
| SDR-2-CON-RW-ZA-1640 |  | Milling of wearing course | 3d | 2026-10-29 | 2026-11-01 | SDR-2-CON-RW-ZA-1470 SS, SDR-2-CON-RW-ZA-1630 |  | 20d |
|  | 2 | **Base Course** |  | 2026-10-06 | 2026-10-28 |  |  |  |
| SDR-2-CON-RW-ZA-1630 |  | Aggregate base course layer | 20d | 2026-10-06 | 2026-10-28 | SDR-2-CON-RW-ZA-1600 |  | 20d |
|  | 3 | **Asphalt Works** |  | 2026-11-02 | 2026-12-09 |  |  |  |
| SDR-2-CON-RW-ZA-1650 |  | Asphalt works 1st Layer with MC-01 | 21d | 2026-11-02 | 2026-11-25 | SDR-2-CON-RW-ZA-1630, SDR-2-CON-RW-ZA-1640, SDR-2-CON-RW-ZA-1610 |  | 20d |
| SDR-2-CON-RW-ZA-1660 |  | Asphalt works 2nd layer with RC-02 | 12d | 2026-11-26 | 2026-12-09 | SDR-2-CON-RW-ZA-3030, SDR-2-CON-RW-ZA-1650 |  | 20d |
|  | 4 | **Kerbstone Installation** |  | 2026-10-06 | 2027-01-02 |  |  |  |
| SDR-2-CON-RW-ZA-3430 |  | Kerbstone Installation "all Types" Part 1 | 20d | 2026-10-06 | 2026-10-28 | SDR-2-CON-RW-ZA-1600 |  | 45d |
| SDR-2-CON-RW-ZA-1670 |  | Kerbstone Installation "all Types" Part 2 | 20d | 2026-12-10 | 2027-01-02 | SDR-2-CON-RW-ZA-1480, SDR-2-CON-RW-ZA-3430, SDR-2-CON-RW-ZA-1660 |  | 20d |
|  | 5 | **Interlock Installation** |  | 2027-01-03 | 2027-01-26 |  |  |  |
| SDR-2-CON-RW-ZA-1680 |  | Interlock Installation | 21d | 2027-01-03 | 2027-01-26 | SDR-2-CON-RW-ZA-1670 |  | 20d |
|  | 6 | **Road Marking** |  | 2027-01-27 | 2027-03-02 |  |  |  |
| SDR-2-CON-RW-ZA-1690 |  | Retroreflective Thermoplastic White Traffic lines | 15d | 2027-01-27 | 2027-02-13 | SDR-2-CON-RW-ZA-1680 |  | 20d |
| SDR-2-CON-RW-ZA-1700 |  | Retroreflective Thermoplastic Yellow, Traffic lines | 14d | 2027-02-14 | 2027-03-02 | SDR-2-CON-RW-ZA-1690 |  | 20d |
|  | 7 | **Traffic Signage** |  | 2027-03-03 | 2027-03-30 |  |  |  |
| SDR-2-CON-RW-ZA-1710 |  | Single post-Traffic signs Installation | 20d | 2027-03-03 | 2027-03-30 | SDR-2-CON-RW-ZA-1700, SDR-2-CON-RW-ZA-1620 |  | 20d |
|  | 7 | **ROAD WORKS IN ( PH2-A-MCC0 )** |  | 2026-04-09 | 2027-04-07 |  |  |  |
|  | 1 | **Earth Works Road** |  | 2026-05-09 | 2026-06-01 |  |  |  |
| SDR-2-CON-RW-ZA-1720 |  | Roadway Excavation and cuttings | 20d | 2026-05-09 A | 2026-06-01 A | SDR-2-CON-RW-ZA-1580 SS+4d | 100% |  |
|  | 10 | **Backfilling Works** |  | 2026-04-09 | 2026-07-05 |  |  |  |
| SDR-2-CON-RW-ZA-3080 |  | Embankments to the Road 1 Layer | 21d | 2026-04-09 A | 2026-04-22 A | SDR-2-CON-RW-ZA-1720 | 100% |  |
| SDR-2-CON-RW-ZA-3090 |  | Embankments to the Road 2 Layer | 21d | 2026-04-22 A | 2026-04-30 A | SDR-2-CON-RW-ZA-3080 | 100% |  |
| SDR-2-CON-RW-ZA-3100 |  | Embankments to the Road 3 Layer | 21d | 2026-06-22 A | 2026-06-29 A | SDR-2-CON-RW-ZA-3090, SDR-2-PRO-DEL-M-1050 SS, SDR-2-PRO-DEL-M-1030 SS | 100% |  |
| SDR-2-CON-RW-ZA-1730 |  | Embankments to the Road 4 Layer | 21d | 2026-06-29 A | 2026-07-05 A | SDR-2-CON-RW-ZA-3100 FS+4d | 100% |  |
|  | 11 | **Subgrade** |  | 2026-07-01 | 2026-09-17 |  |  |  |
| SDR-2-CON-RW-ZA-1740 |  | Subgrade layer works | 16d | 2026-07-01 A | 2026-09-17 A | SDR-2-CON-RW-ZA-1730 | 100% |  |
|  | 9 | **Earth Works Plot** |  | 2026-06-08 | 2026-11-05 |  |  |  |
| SDR-2-CON-RW-ZA-1750 |  | Plot Excavation for cuttings (all types of soil) | 20d | 2026-06-08 A | 2026-10-27 | SDR-2-CON-RW-ZA-1720, SDR-2-CON-RW-ZA-1740, SDR-2-PRO-DEL-E-1160 FF | 80% | 34.1d |
| SDR-2-CON-RW-ZA-3110 |  | Embankments to the Plot 1 Layer | 21d | 2026-07-07 A | 2026-11-05 A | SDR-2-CON-RW-ZA-1750 | 100% |  |
| SDR-2-CON-RW-ZA-1760 |  | Embankments to the Plot 2 Layer | 21d | 2026-07-18 A | 2026-10-28 | SDR-2-CON-RW-ZA-3110, SDR-2-CON-RW-ZA-3070 FS+4d | 80% | 104.1d |
|  | 2 | **Base Course** |  | 2026-08-31 | 2026-10-07 |  |  |  |
| SDR-2-CON-RW-ZA-1770 |  | Aggregate base course layer | 21d | 2026-08-31 A | 2026-10-07 | SDR-2-CON-RW-ZA-1740 | 90% | 43d |
|  | 8 | **Demolition Work** |  | 2026-10-08 | 2026-10-11 |  |  |  |
| SDR-2-CON-RW-ZA-1780 |  | Milling of wearing course | 3d | 2026-10-08 | 2026-10-11 | SDR-2-CON-RW-ZA-3430 SS, SDR-2-CON-RW-ZA-1770 |  | 43d |
|  | 3 | **Asphalt Works** |  | 2026-11-18 | 2026-12-19 |  |  |  |
| SDR-2-CON-RW-ZA-1790 |  | Asphalt works 1st Layer with MC-01 | 16d | 2026-11-18 | 2026-12-06 | SDR-2-CON-RW-ZA-3470, SDR-2-CON-RW-ZA-1770, SDR-2-CON-RW-ZA-1780 |  | 11d |
| SDR-2-CON-RW-ZA-1800 |  | Asphalt works 2nd layer with RC-02 | 11d | 2026-12-07 | 2026-12-19 | SDR-2-CON-RW-ZA-1790 |  | 11d |
|  | 4 | **Kerbstone Installation** |  | 2026-10-05 | 2027-01-11 |  |  |  |
| SDR-2-CON-RW-ZA-3450 |  | Kerbstone Installation "all Types" Part 1 | 18d | 2026-10-05 | 2026-10-25 | SDR-2-CON-RW-ZA-1740 |  | 59d |
| SDR-2-CON-RW-ZA-1810 |  | Kerbstone Installation "all Types" Part 2 | 20d | 2026-12-20 | 2027-01-11 | SDR-2-CON-RW-ZA-1800 |  | 11d |
|  | 5 | **Interlock Installation** |  | 2027-01-12 | 2027-02-04 |  |  |  |
| SDR-2-CON-RW-ZA-1820 |  | Interlock Installation | 21d | 2027-01-12 | 2027-02-04 | SDR-2-CON-RW-ZA-1810 |  | 11d |
|  | 6 | **Road Marking** |  | 2027-02-06 | 2027-03-15 |  |  |  |
| SDR-2-CON-RW-ZA-1830 |  | Retroreflective Thermoplastic White Traffic lines | 14d | 2027-02-06 | 2027-02-21 | SDR-2-CON-RW-ZA-1760 SS, SDR-2-CON-RW-ZA-1820 |  | 11d |
| SDR-2-CON-RW-ZA-1840 |  | Retroreflective Thermoplastic Yellow, Traffic lines | 14d | 2027-02-23 | 2027-03-15 | SDR-2-CON-RW-ZA-1830 |  | 11d |
|  | 7 | **Traffic Signage** |  | 2027-03-16 | 2027-04-07 |  |  |  |
| SDR-2-CON-RW-ZA-1850 |  | Single post-Traffic signs Installation | 20d | 2027-03-16 | 2027-04-07 | SDR-2-CON-RW-ZA-1840, SDR-2-CON-RW-ZA-1760 |  | 11d |
|  | 4 | **ROAD WORKS IN ( PH2-A-MCD0 )** |  | 2026-05-09 | 2027-04-10 |  |  |  |
|  | 1 | **Earth Works Road** |  | 2026-05-09 | 2026-05-12 |  |  |  |
| SDR-2-CON-RW-ZA-1860 |  | Roadway Excavation and cuttings | 20d | 2026-05-09 A | 2026-05-12 A | SDR-2-CON-RW-ZA-1720 SS+3d | 100% |  |
|  | 10 | **Backfilling Works** |  | 2026-05-15 | 2026-07-05 |  |  |  |
| SDR-2-CON-RW-ZA-3120 |  | Embankments to the Road 1 Layer | 21d | 2026-05-15 A | 2026-05-24 A | SDR-2-CON-RW-ZA-1860 | 100% |  |
| SDR-2-CON-RW-ZA-3130 |  | Embankments to the Road 2 Layer | 21d | 2026-05-24 A | 2026-06-04 A | SDR-2-CON-RW-ZA-3120, SDR-2-PRO-DES-E-1000, SDR-2-PRO-DES-C-1000 | 100% |  |
| SDR-2-CON-RW-ZA-3140 |  | Embankments to the Road 3 Layer | 21d | 2026-06-08 A | 2026-06-18 A | SDR-2-CON-RW-ZA-3130 | 100% |  |
| SDR-2-CON-RW-ZA-1870 |  | Embankments to the Road 4 Layer | 21d | 2026-06-24 A | 2026-07-05 A | SDR-2-CON-RW-ZA-3140 FS+1d, SDR-2-PRO-DEL-E-1040 | 100% |  |
|  | 11 | **Subgrade** |  | 2026-08-11 | 2026-09-17 |  |  |  |
| SDR-2-CON-RW-ZA-1880 |  | Subgrade layer works | 20d | 2026-08-11 A | 2026-09-17 A | SDR-2-PRO-DES-C-1070, SDR-2-CON-RW-ZA-1870 | 100% |  |
|  | 9 | **Earth Works Plot** |  | 2026-06-09 | 2026-10-05 |  |  |  |
| SDR-2-CON-RW-ZA-3150 |  | Embankments to the Plot 1 Layer | 21d | 2026-06-09 A | 2026-06-14 A | SDR-2-CON-RW-ZA-1890 SS | 100% |  |
| SDR-2-CON-RW-ZA-1890 |  | Plot Excavation for cuttings (all types of soil) | 21d | 2026-06-15 A | 2026-10-05 | SDR-2-CON-RW-ZA-1860, SDR-2-CON-RW-ZA-1880 | 50% | 48d |
| SDR-2-CON-RW-ZA-1900 |  | Embankments to the Plot 2 Layer | 21d | 2026-06-23 A | 2026-10-05 | SDR-2-CON-RW-ZA-3150 FS+1d | 50% | 111d |
|  | 2 | **Base Course** |  | 2026-08-30 | 2026-10-05 |  |  |  |
| SDR-2-CON-RW-ZA-1910 |  | Aggregate base course layer | 20d | 2026-08-30 A | 2026-10-05 | SDR-2-CON-RW-ZA-1880 | 90% | 52d |
|  | 8 | **Demolition Work** |  | 2026-10-26 | 2026-11-02 |  |  |  |

| ID | WBS | Task | Duration | Start | Finish | Predecessors | Complete | Total float |
| --- | --- | --- | --- | --- | --- | --- | --- | --- |
| SDR-2-CON-RW-ZA-1920 |  | Milling of wearing course | 6d | 2026-10-26 | 2026-11-02 | SDR-2-CON-RW-ZA-1910, SDR-2-CON-RW-ZA-1750 SS |  | 34.1d |
|  | 3 | **Asphalt Works** |  | 2026-12-02 | 2026-12-20 |  |  |  |
| SDR-2-CON-RW-ZA-1930 |  | Asphalt works 1st Layer with MC-01 | 9d | 2026-12-02 | 2026-12-12 | SDR-2-CON-RW-ZA-3450 SS, SDR-2-CON-RW-ZA-3480, SDR-2-CON-ST-ZA-6340, SDR-2-CON-RW-ZA-1910, SDR-2-CON-RW-ZA-1920 |  | 9d |
| SDR-2-CON-RW-ZA-1940 |  | Asphalt works 2nd layer with RC-02 | 7d | 2026-12-13 | 2026-12-20 | SDR-2-CON-RW-ZA-1930 |  | 9d |
|  | 4 | **Kerbstone Installation** |  | 2026-10-05 | 2027-01-13 |  |  |  |
| SDR-2-CON-RW-ZA-3460 |  | Kerbstone Installation "all Types" Part 1 | 18d | 2026-10-05 | 2026-10-25 | SDR-2-CON-RW-ZA-1880 |  | 57d |
| SDR-2-CON-RW-ZA-1950 |  | Kerbstone Installation "all Types" Part 2 | 21d | 2026-12-21 | 2027-01-13 | SDR-2-CON-RW-ZA-1940, SDR-2-CON-RW-ZA-3460 |  | 9d |
|  | 5 | **Interlock Installation** |  | 2027-01-14 | 2027-02-07 |  |  |  |
| SDR-2-CON-RW-ZA-1960 |  | Interlock Installation | 21d | 2027-01-14 | 2027-02-07 | SDR-2-CON-RW-ZA-1950 |  | 9d |
|  | 6 | **Road Marking** |  | 2027-02-08 | 2027-03-17 |  |  |  |
| SDR-2-CON-RW-ZA-1970 |  | Retroreflective Thermoplastic White Traffic lines | 14d | 2027-02-08 | 2027-02-24 | SDR-2-CON-RW-ZA-1960, SDR-2-CON-RW-ZA-1900 SS+2d |  | 9d |
| SDR-2-CON-RW-ZA-1980 |  | Retroreflective Thermoplastic Yellow, Traffic lines | 14d | 2027-02-25 | 2027-03-17 | SDR-2-CON-RW-ZA-1970 |  | 9d |
|  | 7 | **Traffic Signage** |  | 2027-03-18 | 2027-04-10 |  |  |  |
| SDR-2-CON-RW-ZA-1990 |  | Single post-Traffic signs Installation | 20d | 2027-03-18 | 2027-04-10 | SDR-2-CON-RW-ZA-1900, SDR-2-CON-RW-ZA-1980 |  | 9d |
|  | 5 | **ROAD WORKS IN ( PH2-A-MCE0 )** |  | 2026-04-07 | 2027-03-25 |  |  |  |
|  | 1 | **Earth Works Road** |  | 2026-05-02 | 2026-06-01 |  |  |  |
| SDR-2-CON-RW-ZA-2000 |  | Roadway Excavation and cuttings | 20d | 2026-05-02 A | 2026-06-01 A | SDR-2-CON-RW-ZA-1860 SS+3d | 100% |  |
|  | 10 | **Backfilling Works** |  | 2026-04-07 | 2026-06-16 |  |  |  |
| SDR-2-CON-RW-ZA-3160 |  | Embankments to the Road 1 Layer | 21d | 2026-04-07 A | 2026-05-24 A | SDR-2-CON-RW-ZA-2000 | 100% |  |
| SDR-2-CON-RW-ZA-3170 |  | Embankments to the Road 2 Layer | 21d | 2026-05-10 A | 2026-05-19 A | SDR-2-CON-RW-ZA-3160 | 100% |  |
| SDR-2-CON-RW-ZA-3180 |  | Embankments to the Road 3 Layer | 21d | 2026-05-19 A | 2026-06-01 A | SDR-2-CON-RW-ZA-3170 | 100% |  |
| SDR-2-CON-RW-ZA-2010 |  | Embankments to the Road 4 Layer | 21d | 2026-06-03 A | 2026-06-16 A | SDR-2-CON-RW-ZA-3180, SDR-2-CON-RW-ZA-3180 FF | 100% |  |
|  | 11 | **Subgrade** |  | 2026-10-05 | 2026-10-27 |  |  |  |
| SDR-2-CON-RW-ZA-2020 |  | Subgrade layer works | 20d | 2026-10-05 A | 2026-10-27 | SDR-2-CON-RW-ZA-2010 | 10% | 11d |
|  | 9 | **Earth Works Plot** |  | 2026-06-14 | 2026-10-28 |  |  |  |
| SDR-2-CON-RW-ZA-3190 |  | Embankments to the Plot 1 Layer | 21d | 2026-06-14 A | 2026-10-27 | SDR-2-CON-RW-ZA-2030 FF | 50% | 72d |
| SDR-2-CON-RW-ZA-2030 |  | Plot Excavation for cuttings (all types of soil) | 21d | 2026-06-15 A | 2026-10-27 | SDR-2-CON-RW-ZA-2000, SDR-2-CON-RW-ZA-2020 FF | 25% | 36d |
| SDR-2-CON-RW-ZA-2040 |  | Embankments to the Plot 2 Layer | 21d | 2026-07-13 A | 2026-10-28 | SDR-2-CON-RW-ZA-3110, SDR-2-CON-RW-ZA-3190 FF | 25% | 71.1d |
|  | 2 | **Base Course** |  | 2026-10-28 | 2026-11-05 |  |  |  |
| SDR-2-CON-RW-ZA-2050 |  | Aggregate base course layer | 8d | 2026-10-28 | 2026-11-05 | SDR-2-CON-RW-ZA-2020 |  | 22d |
|  | 8 | **Demolition Work** |  | 2026-11-07 | 2026-11-08 |  |  |  |
| SDR-2-CON-RW-ZA-2060 |  | Milling of wearing course | 2d | 2026-11-07 | 2026-11-08 | SDR-2-CON-RW-ZA-2050 |  | 22d |
|  | 3 | **Asphalt Works** |  | 2026-11-09 | 2026-12-05 |  |  |  |
| SDR-2-CON-RW-ZA-2070 |  | Asphalt works 1st Layer with MC-01 | 10d | 2026-11-09 | 2026-11-19 | SDR-2-CON-RW-ZA-2050, SDR-2-CON-RW-ZA-2060, SDR-2-CON-RW-ZA-1890 FS+3d |  | 22d |
| SDR-2-CON-RW-ZA-2080 |  | Asphalt works 2nd layer with RC-02 | 13d | 2026-11-21 | 2026-12-05 | SDR-2-CON-RW-ZA-2070 |  | 22d |
|  | 4 | **Kerbstone Installation** |  | 2026-10-28 | 2026-12-29 |  |  |  |
| SDR-2-CON-RW-ZA-3470 |  | Kerbstone Installation "all Types" Part 1 | 18d | 2026-10-28 | 2026-11-17 | SDR-2-CON-RW-ZA-2020 |  | 11d |
| SDR-2-CON-RW-ZA-2090 |  | Kerbstone Installation "all Types" Part 2 | 21d | 2026-12-06 | 2026-12-29 | SDR-2-CON-RW-ZA-2080 |  | 22d |
|  | 5 | **Interlock Installation** |  | 2026-12-30 | 2027-01-23 |  |  |  |
| SDR-2-CON-RW-ZA-2100 |  | Interlock Installation | 21d | 2026-12-30 | 2027-01-23 | SDR-2-CON-RW-ZA-2090 |  | 22d |
|  | 6 | **Road Marking** |  | 2027-01-24 | 2027-02-25 |  |  |  |
| SDR-2-CON-RW-ZA-2110 |  | Retroreflective Thermoplastic White Traffic lines | 14d | 2027-01-24 | 2027-02-08 | SDR-2-CON-RW-ZA-2100 |  | 22d |
| SDR-2-CON-RW-ZA-2120 |  | Retroreflective Thermoplastic Yellow, Traffic lines | 14d | 2027-02-09 | 2027-02-25 | SDR-2-CON-RW-ZA-2110 |  | 22d |
|  | 7 | **Traffic Signage** |  | 2027-02-27 | 2027-03-25 |  |  |  |
| SDR-2-CON-RW-ZA-2130 |  | Single post-Traffic signs Installation | 20d | 2027-02-27 | 2027-03-25 | SDR-2-CON-RW-ZA-2120, SDR-2-CON-RW-ZA-2040 |  | 22d |
|  | 6 | **ROAD WORKS IN ( PH2-A-MCF0 )** |  | 2026-04-08 | 2027-03-27 |  |  |  |
|  | 1 | **Earth Works Road** |  | 2026-05-02 | 2026-06-21 |  |  |  |
| SDR-2-CON-RW-ZA-2140 |  | Roadway Excavation and cuttings | 20d | 2026-05-02 A | 2026-06-21 A | SDR-2-PRO-DES-C-1000, SDR-2-CON-RW-ZA-2000 SS+3d | 100% |  |
|  | 10 | **Backfilling Works** |  | 2026-04-08 | 2026-06-11 |  |  |  |
| SDR-2-CON-RW-ZA-3200 |  | Embankments to the Road 1 Layer | 21d | 2026-04-08 A | 2026-05-13 A | SDR-2-CON-RW-ZA-2140 | 100% |  |
| SDR-2-CON-RW-ZA-3210 |  | Embankments to the Road 2 Layer | 21d | 2026-05-14 A | 2026-05-24 A | SDR-2-CON-RW-ZA-3200 | 100% |  |
| SDR-2-CON-RW-ZA-3220 |  | Embankments to the Road 3 Layer | 19d | 2026-05-24 A | 2026-06-06 A | SDR-2-CON-RW-ZA-3210 | 100% |  |
| SDR-2-CON-RW-ZA-2150 |  | Embankments to the Road 4 Layer | 19d | 2026-06-08 A | 2026-06-11 A | SDR-2-CON-RW-ZA-3220 | 100% |  |
|  | 11 | **Subgrade** |  | 2026-10-05 | 2026-10-27 |  |  |  |
| SDR-2-CON-RW-ZA-2160 |  | Subgrade layer works | 20d | 2026-10-05 A | 2026-10-27 | SDR-2-CON-RW-ZA-2150 | 10% | 21d |
|  | 9 | **Earth Works Plot** |  | 2026-06-01 | 2026-08-12 |  |  |  |
| SDR-2-CON-RW-ZA-3230 |  | Embankments to the Plot 1 Layer | 21d | 2026-06-01 A | 2026-08-06 A | SDR-2-CON-RW-ZA-2170 | 100% |  |
| SDR-2-CON-RW-ZA-2170 |  | Plot Excavation for cuttings (all types of soil) | 20d | 2026-07-13 A | 2026-08-11 A | SDR-2-CON-RW-ZA-2140 | 100% |  |
| SDR-2-CON-RW-ZA-2180 |  | Embankments to the Plot 2 Layer | 21d | 2026-08-03 A | 2026-08-12 A | SDR-2-CON-RW-ZA-3230 FS+1d, SDR-2-CON-RW-ZA-3110, SDR-2-CON-RW-ZA-1900 SS | 100% |  |
|  | 2 | **Base Course** |  | 2026-10-28 | 2026-11-10 |  |  |  |
| SDR-2-CON-RW-ZA-2190 |  | Aggregate base course layer | 12d | 2026-10-28 | 2026-11-10 | SDR-2-CON-RW-ZA-2160 |  | 21d |
|  | 8 | **Demolition Work** |  | 2026-11-11 | 2026-11-12 |  |  |  |
| SDR-2-CON-RW-ZA-2200 |  | Milling of wearing course | 2d | 2026-11-11 | 2026-11-12 | SDR-2-CON-RW-ZA-3470 SS, SDR-2-CON-RW-ZA-2190 |  | 21d |
|  | 3 | **Asphalt Works** |  | 2026-11-14 | 2026-12-06 |  |  |  |
| SDR-2-CON-RW-ZA-2210 |  | Asphalt works 1st Layer with MC-01 | 8d | 2026-11-14 | 2026-11-22 | SDR-2-CON-RW-ZA-2030 SS, SDR-2-CON-RW-ZA-3150 SS, SDR-2-CON-RW-ZA-2200 |  | 21d |
| SDR-2-CON-RW-ZA-2220 |  | Asphalt works 2nd layer with RC-02 | 12d | 2026-11-23 | 2026-12-06 | SDR-2-CON-RW-ZA-2210 |  | 21d |
|  | 4 | **Kerbstone Installation** |  | 2026-10-28 | 2026-12-30 |  |  |  |
| SDR-2-CON-RW-ZA-3480 |  | Kerbstone Installation "all Types" Part 1 | 18d | 2026-10-28 | 2026-11-17 | SDR-2-CON-RW-ZA-2160 |  | 21d |
| SDR-2-CON-RW-ZA-2230 |  | Kerbstone Installation "all Types" Part 2 | 21d | 2026-12-07 | 2026-12-30 | SDR-2-CON-RW-ZA-2220 |  | 21d |
|  | 5 | **Interlock Installation** |  | 2026-12-31 | 2027-01-24 |  |  |  |

| ID | WBS | Task | Duration | Start | Finish | Predecessors | Complete | Total float |
| --- | --- | --- | --- | --- | --- | --- | --- | --- |
| SDR-2-CON-RW-ZA-2240 |  | Interlock Installation | 21d | 2026-12-31 | 2027-01-24 | SDR-2-CON-RW-ZA-2230 |  | 21d |
|  | 6 | **Road Marking** |  | 2027-01-25 | 2027-02-27 |  |  |  |
| SDR-2-CON-RW-ZA-2250 |  | Retroreflective Thermoplastic White Traffic lines | 14d | 2027-01-25 | 2027-02-09 | SDR-2-CON-RW-ZA-2240 |  | 21d |
| SDR-2-CON-RW-ZA-2260 |  | Retroreflective Thermoplastic Yellow, Traffic lines | 14d | 2027-02-10 | 2027-02-27 | SDR-2-CON-RW-ZA-2250 |  | 21d |
|  | 7 | **Traffic Signage** |  | 2027-02-28 | 2027-03-27 |  |  |  |
| SDR-2-CON-RW-ZA-2270 |  | Single post-Traffic signs Installation | 20d | 2027-02-28 | 2027-03-27 | SDR-2-CON-RW-ZA-2260, SDR-2-CON-RW-ZA-2180 FS+1d |  | 21d |
|  | 9 | **ROAD WORKS IN ( PH2-A-MCG0 )** |  | 2026-04-22 | 2027-03-07 |  |  |  |
|  | 1 | **Earth Works Road** |  | 2026-05-02 | 2026-05-24 |  |  |  |
| SDR-2-CON-RW-ZA-2280 |  | Roadway Excavation and cuttings | 20d | 2026-05-02 A | 2026-05-24 A | SDR-2-CON-RW-ZA-2140 SS | 100% |  |
|  | 10 | **Backfilling Works** |  | 2026-04-22 | 2026-06-15 |  |  |  |
| SDR-2-CON-RW-ZA-3240 |  | Embankments to the Road 1 Layer | 21d | 2026-04-22 A | 2026-05-13 A | SDR-2-CON-RW-ZA-2280 | 100% |  |
| SDR-2-CON-RW-ZA-3250 |  | Embankments to the Road 2 Layer | 21d | 2026-05-13 A | 2026-05-25 A | SDR-2-CON-RW-ZA-3240 | 100% |  |
| SDR-2-CON-RW-ZA-2290 |  | Embankments to the Road 4 Layer | 21d | 2026-05-24 A | 2026-06-08 A | SDR-2-CON-RW-ZA-3260 | 100% |  |
| SDR-2-CON-RW-ZA-3260 |  | Embankments to the Road 3 Layer | 21d | 2026-05-24 A | 2026-06-15 A | SDR-2-CON-RW-ZA-3250 | 100% |  |
|  | 11 | **Subgrade** |  | 2026-10-05 | 2026-10-25 |  |  |  |
| SDR-2-CON-RW-ZA-2300 |  | Subgrade layer works | 18d | 2026-10-05 A | 2026-10-25 | SDR-2-CON-RW-ZA-2290 | 10% | 27d |
|  | 9 | **Earth Works Plot** |  | 2026-06-01 | 2026-10-27 |  |  |  |
| SDR-2-CON-RW-ZA-3270 |  | Embankments to the Plot 1 Layer | 21d | 2026-06-01 A | 2026-06-23 A | SDR-2-CON-RW-ZA-2310 SS | 100% |  |
| SDR-2-CON-RW-ZA-2310 |  | Plot Excavation for cuttings (all types of soil) | 21d | 2026-07-13 A | 2026-10-25 | SDR-2-CON-RW-ZA-2280, SDR-2-CON-RW-ZA-2300 FF | 70% | 60d |
| SDR-2-CON-RW-ZA-2320 |  | Embankments to the Plot 2 Layer | 21d | 2026-07-27 A | 2026-10-27 | SDR-2-CON-RW-ZA-3270, SDR-2-CON-RW-ZA-3270 FF, SDR-2-CON-RW-ZA-3230, SDR-2-CON-RW-ZA-3190 FF | 70% | 126d |
|  | 2 | **Base Course** |  | 2026-10-26 | 2026-11-02 |  |  |  |
| SDR-2-CON-RW-ZA-2330 |  | Aggregate base course layer | 7d | 2026-10-26 | 2026-11-02 | SDR-2-CON-RW-ZA-2300 |  | 33d |
|  | 8 | **Demolition Work** |  | 2026-11-03 | 2026-11-04 |  |  |  |
| SDR-2-CON-RW-ZA-2340 |  | Milling of wearing course | 2d | 2026-11-03 | 2026-11-04 | SDR-2-CON-RW-ZA-3480 SS, SDR-2-CON-RW-ZA-2330 |  | 33d |
|  | 3 | **Asphalt Works** |  | 2026-11-05 | 2026-11-21 |  |  |  |
| SDR-2-CON-RW-ZA-2350 |  | Asphalt works 1st Layer with MC-01 | 3d | 2026-11-05 | 2026-11-08 | SDR-2-CON-RW-ZA-3490 SS, SDR-2-CON-RW-ZA-2330, SDR-2-CON-RW-ZA-2340, SDR-2-CON-RW-ZA-2170 SS |  | 33d |
| SDR-2-CON-RW-ZA-2360 |  | Asphalt works 2nd layer with RC-02 | 11d | 2026-11-09 | 2026-11-21 | SDR-2-CON-RW-ZA-2310, SDR-2-CON-RW-ZA-2350 |  | 48d |
|  | 4 | **Kerbstone Installation** |  | 2026-10-26 | 2026-12-15 |  |  |  |
| SDR-2-CON-RW-ZA-3490 |  | Kerbstone Installation "all Types" Part 1 | 18d | 2026-10-26 | 2026-11-15 | SDR-2-CON-RW-ZA-2300 |  | 27d |
| SDR-2-CON-RW-ZA-2370 |  | Kerbstone Installation "all Types" Part 2 | 21d | 2026-11-22 | 2026-12-15 | SDR-2-CON-RW-ZA-2360 |  | 48d |
|  | 5 | **Interlock Installation** |  | 2026-12-16 | 2027-01-09 |  |  |  |
| SDR-2-CON-RW-ZA-2380 |  | Interlock Installation | 21d | 2026-12-16 | 2027-01-09 | SDR-2-CON-RW-ZA-2180 FS+4d, SDR-2-CON-RW-ZA-2370 |  | 49d |
|  | 6 | **Road Marking** |  | 2027-01-10 | 2027-02-10 |  |  |  |
| SDR-2-CON-RW-ZA-2390 |  | Retroreflective Thermoplastic White Traffic lines | 14d | 2027-01-10 | 2027-01-25 | SDR-2-CON-RW-ZA-2380 |  | 49d |
| SDR-2-CON-RW-ZA-2400 |  | Retroreflective Thermoplastic Yellow, Traffic lines | 14d | 2027-01-26 | 2027-02-10 | SDR-2-CON-RW-ZA-2390 |  | 49d |
|  | 7 | **Traffic Signage** |  | 2027-02-11 | 2027-03-07 |  |  |  |
| SDR-2-CON-RW-ZA-2410 |  | Single post-Traffic signs Installation | 20d | 2027-02-11 | 2027-03-07 | SDR-2-CON-RW-ZA-2320, SDR-2-CON-RW-ZA-2400, SDR-2-CON-RW-ZA-2320 SS+2d |  | 49d |
|  | 10 | **ROAD WORKS IN ( PH2-A-MCH0 )** |  | 2026-04-22 | 2027-03-21 |  |  |  |
|  | 1 | **Earth Works Road** |  | 2026-04-22 | 2026-05-02 |  |  |  |
| SDR-2-CON-RW-ZA-2420 |  | Roadway Excavation and cuttings | 21d | 2026-04-22 A | 2026-05-02 A | SDR-2-CON-RW-ZA-2280 SS | 100% |  |
|  | 10 | **Backfilling Works** |  | 2026-04-25 | 2026-06-15 |  |  |  |
| SDR-2-CON-RW-ZA-3280 |  | Embankments to the Road 1 Layer | 21d | 2026-04-25 A | 2026-05-07 A | SDR-2-CON-RW-ZA-2420 | 100% |  |
| SDR-2-CON-RW-ZA-3290 |  | Embankments to the Road 2 Layer | 21d | 2026-05-09 A | 2026-05-18 A | SDR-2-CON-RW-ZA-3280 | 100% |  |
| SDR-2-CON-RW-ZA-3300 |  | Embankments to the Road 3 Layer | 21d | 2026-05-18 A | 2026-05-31 A | SDR-2-CON-RW-ZA-3290 | 100% |  |
| SDR-2-CON-RW-ZA-2430 |  | Embankments to the Road 4 Layer | 21d | 2026-06-01 A | 2026-06-15 A | SDR-2-CON-RW-ZA-3300 | 100% |  |
|  | 11 | **Subgrade** |  | 2026-10-05 | 2026-10-13 |  |  |  |
| SDR-2-CON-RW-ZA-2440 |  | Subgrade layer works | 8d | 2026-10-05 A | 2026-10-13 | SDR-2-CON-RW-ZA-2430 | 10% | 14d |
|  | 9 | **Earth Works Plot** |  | 2026-06-01 | 2026-10-29 |  |  |  |
| SDR-2-CON-RW-ZA-2450 |  | Plot Excavation for cuttings (all types of soil) | 21d | 2026-06-01 A | 2026-06-08 A | SDR-2-CON-RW-ZA-2420 | 100% |  |
| SDR-2-CON-RW-ZA-3310 |  | Embankments to the Plot 1 Layer | 21d | 2026-06-01 A | 2026-10-05 | SDR-2-CON-RW-ZA-2450 | 85% | 57d |
| SDR-2-CON-RW-ZA-2460 |  | Embankments to the Plot 2 Layer | 21d | 2026-10-06 | 2026-10-29 | SDR-2-CON-RW-ZA-3310 |  | 57d |
|  | 2 | **Base Course** |  | 2026-10-14 | 2026-10-31 |  |  |  |
| SDR-2-CON-RW-ZA-2470 |  | Aggregate base course layer | 15d | 2026-10-14 | 2026-10-31 | SDR-2-CON-RW-ZA-2440 |  | 15d |
|  | 8 | **Demolition Work** |  | 2026-11-01 | 2026-11-02 |  |  |  |
| SDR-2-CON-RW-ZA-2480 |  | Milling of wearing course | 2d | 2026-11-01 | 2026-11-02 | SDR-2-CON-RW-ZA-2470 |  | 15d |
|  | 3 | **Asphalt Works** |  | 2026-11-04 | 2026-11-30 |  |  |  |
| SDR-2-CON-RW-ZA-2490 |  | Asphalt works 1st Layer with MC-01 | 12d | 2026-11-04 | 2026-11-17 | SDR-2-CON-RW-ZA-3500, SDR-2-CON-RW-ZA-2470, SDR-2-CON-RW-ZA-2480 |  | 14d |
| SDR-2-CON-RW-ZA-2500 |  | Asphalt works 2nd layer with RC-02 | 11d | 2026-11-18 | 2026-11-30 | SDR-2-CON-RW-ZA-2490 |  | 14d |
|  | 4 | **Kerbstone Installation** |  | 2026-10-14 | 2026-12-24 |  |  |  |
| SDR-2-CON-RW-ZA-3500 |  | Kerbstone Installation "all Types" Part 1 | 18d | 2026-10-14 | 2026-11-03 | SDR-2-CON-RW-ZA-2440 |  | 14d |
| SDR-2-CON-RW-ZA-2510 |  | Kerbstone Installation "all Types" Part 2 | 21d | 2026-12-01 | 2026-12-24 | SDR-2-CON-RW-ZA-2500 |  | 14d |
|  | 5 | **Interlock Installation** |  | 2026-12-26 | 2027-01-18 |  |  |  |
| SDR-2-CON-RW-ZA-2520 |  | Interlock Installation | 21d | 2026-12-26 | 2027-01-18 | SDR-2-CON-RW-ZA-2040, SDR-2-CON-RW-ZA-2510 |  | 22d |
|  | 6 | **Road Marking** |  | 2027-01-19 | 2027-02-20 |  |  |  |
| SDR-2-CON-RW-ZA-2530 |  | Retroreflective Thermoplastic White Traffic lines | 14d | 2027-01-19 | 2027-02-03 | SDR-2-CON-RW-ZA-2520 |  | 22d |
| SDR-2-CON-RW-ZA-2540 |  | Retroreflective Thermoplastic Yellow, Traffic lines | 14d | 2027-02-04 | 2027-02-20 | SDR-2-CON-RW-ZA-2530 |  | 22d |
|  | 7 | **Traffic Signage** |  | 2027-02-21 | 2027-03-21 |  |  |  |
| SDR-2-CON-RW-ZA-2550 |  | Single post-Traffic signs Installation | 20d | 2027-02-21 | 2027-03-21 | SDR-2-CON-RW-ZA-2540, SDR-2-CON-RW-ZA-2460 |  | 22d |
|  | 11 | **ROAD WORKS IN ( PH2-ART-MC00 )** |  | 2026-04-28 | 2027-02-15 |  |  |  |
|  | 1 | **Earth Works Road** |  | 2026-04-28 | 2026-07-20 |  |  |  |

| ID | WBS | Task | Duration | Start | Finish | Predecessors | Complete | Total float |
| --- | --- | --- | --- | --- | --- | --- | --- | --- |
| SDR-2-CON-RW-ZA-2560 |  | Roadway Excavation and cuttings | 21d | 2026-04-28 A | 2026-07-20 A | SDR-2-CON-RW-ZA-2420 SS | 100% |  |
|  | 10 | **Backfilling Works** |  | 2026-06-01 | 2026-06-28 |  |  |  |
| SDR-2-CON-RW-ZA-3320 |  | Embankments to the Road 1 Layer | 21d | 2026-06-01 A | 2026-06-08 A | SDR-2-CON-RW-ZA-2560 | 100% |  |
| SDR-2-CON-RW-ZA-3330 |  | Embankments to the Road 2 Layer | 21d | 2026-06-08 A | 2026-06-15 A | SDR-2-CON-RW-ZA-3320 | 100% |  |
| SDR-2-CON-RW-ZA-3340 |  | Embankments to the Road 3 Layer | 21d | 2026-06-15 A | 2026-06-22 A | SDR-2-CON-RW-ZA-3330 | 100% |  |
| SDR-2-CON-RW-ZA-2570 |  | Embankments to the Road 4 Layer | 21d | 2026-06-22 A | 2026-06-28 A | SDR-2-CON-RW-ZA-3340 | 100% |  |
|  | 11 | **Subgrade** |  | 2026-08-11 | 2026-09-17 |  |  |  |
| SDR-2-CON-RW-ZA-2580 |  | Subgrade layer works | 13d | 2026-08-11 A | 2026-09-17 A | SDR-2-CON-RW-ZA-2570 | 100% |  |
|  | 9 | **Earth Works Plot** |  | 2026-06-07 | 2026-06-25 |  |  |  |
| SDR-2-CON-RW-ZA-3350 |  | Embankments to the Plot 1 Layer | 21d | 2026-06-07 A | 2026-06-16 A | SDR-2-CON-RW-ZA-2590 | 100% |  |
| SDR-2-CON-RW-ZA-2590 |  | Plot Excavation for cuttings (all types of soil) | 21d | 2026-06-08 A | 2026-06-15 A | SDR-2-CON-RW-ZA-2560, SDR-2-CON-RW-ZA-2580 | 100% |  |
| SDR-2-CON-RW-ZA-2600 |  | Embankments to the Plot 2 Layer | 21d | 2026-06-15 A | 2026-06-25 A | SDR-2-CON-RW-ZA-3350 | 100% |  |
|  | 2 | **Base Course** |  | 2026-08-31 | 2026-10-05 |  |  |  |
| SDR-2-CON-RW-ZA-2610 |  | Aggregate base course layer | 11d | 2026-08-31 A | 2026-10-05 A | SDR-2-CON-RW-ZA-2580 | 100% |  |
|  | 8 | **Demolition Work** |  | 2026-10-05 | 2026-10-06 |  |  |  |
| SDR-2-CON-RW-ZA-2620 |  | Milling of wearing course | 2d | 2026-10-05 | 2026-10-06 | SDR-2-CON-RW-ZA-2610 |  | 33d |
|  | 3 | **Asphalt Works** |  | 2026-10-07 | 2026-11-02 |  |  |  |
| SDR-2-CON-RW-ZA-2630 |  | Asphalt works 1st Layer with MC-01 | 12d | 2026-10-07 | 2026-10-20 | SDR-2-CON-RW-ZA-2620 |  | 33d |
| SDR-2-CON-RW-ZA-2640 |  | Asphalt works 2nd layer with RC-02 | 11d | 2026-10-21 | 2026-11-02 | SDR-2-CON-RW-ZA-2630, SDR-2-CON-RW-ZA-2450 |  | 33d |
|  | 4 | **Kerbstone Installation** |  | 2026-10-05 | 2026-11-26 |  |  |  |
| SDR-2-CON-RW-ZA-3510 |  | Kerbstone Installation "all Types" Part 1 | 18d | 2026-10-05 | 2026-10-25 | SDR-2-CON-RW-ZA-2580 |  | 40d |
| SDR-2-CON-RW-ZA-2650 |  | Kerbstone Installation "all Types" Part 2 | 21d | 2026-11-03 | 2026-11-26 | SDR-2-CON-RW-ZA-3310, SDR-2-CON-RW-ZA-2640, SDR-2-CON-RW-ZA-3510 |  | 33d |
|  | 5 | **Interlock Installation** |  | 2026-11-28 | 2026-12-21 |  |  |  |
| SDR-2-CON-RW-ZA-2660 |  | Interlock Installation | 21d | 2026-11-28 | 2026-12-21 | SDR-2-CON-RW-ZA-2460, SDR-2-CON-RW-ZA-2650 |  | 33d |
|  | 6 | **Road Marking** |  | 2026-12-22 | 2027-01-27 |  |  |  |
| SDR-2-CON-RW-ZA-2670 |  | Retroreflective Thermoplastic White Traffic lines | 17d | 2026-12-22 | 2027-01-10 | SDR-2-CON-RW-ZA-2660 |  | 33d |
| SDR-2-CON-RW-ZA-2680 |  | Retroreflective Thermoplastic Yellow, Traffic lines | 15d | 2027-01-11 | 2027-01-27 | SDR-2-CON-RW-ZA-2670 |  | 33d |
|  | 7 | **Traffic Signage** |  | 2027-01-28 | 2027-02-15 |  |  |  |
| SDR-2-CON-RW-ZA-2690 |  | Single post-Traffic signs Installation | 16d | 2027-01-28 | 2027-02-15 | SDR-2-CON-RW-ZA-2680 |  | 33d |
|  | 12 | **ROAD WORKS IN ( PH2-ART-MC10 )** |  | 2026-04-22 | 2027-03-22 |  |  |  |
|  | 1 | **Earth Works Road** |  | 2026-04-22 | 2026-05-13 |  |  |  |
| SDR-2-CON-RW-ZA-2700 |  | Roadway Excavation and cuttings | 20d | 2026-04-22 A | 2026-05-13 A | SDR-2-CON-RW-ZA-2560 SS | 100% |  |
|  | 10 | **Backfilling Works** |  | 2026-05-02 | 2026-06-21 |  |  |  |
| SDR-2-CON-RW-ZA-3360 |  | Embankments to the Road 1 Layer | 21d | 2026-05-02 A | 2026-05-13 A | SDR-2-CON-RW-ZA-2700 | 100% |  |
| SDR-2-CON-RW-ZA-3370 |  | Embankments to the Road 2 Layer | 21d | 2026-05-07 A | 2026-05-18 A | SDR-2-CON-RW-ZA-3360 | 100% |  |
| SDR-2-CON-RW-ZA-3380 |  | Embankments to the Road 3 Layer | 21d | 2026-05-16 A | 2026-05-24 A | SDR-2-CON-RW-ZA-3370 | 100% |  |
| SDR-2-CON-RW-ZA-2710 |  | Embankments to the Road 4 Layer | 21d | 2026-06-11 A | 2026-06-21 A | SDR-2-CON-RW-ZA-3380 FS+1d | 100% |  |
|  | 11 | **Subgrade** |  | 2026-09-24 | 2026-10-18 |  |  |  |
| SDR-2-CON-RW-ZA-2720 |  | Subgrade layer works | 12d | 2026-09-24 A | 2026-10-18 | SDR-2-CON-RW-ZA-2710 | 60% | 40d |
|  | 9 | **Earth Works Plot** |  | 2026-06-09 | 2026-06-29 |  |  |  |
| SDR-2-CON-RW-ZA-2730 |  | Plot Excavation for cuttings (all types of soil) | 21d | 2026-06-09 A | 2026-06-18 A | SDR-2-CON-RW-ZA-2700 | 100% |  |
| SDR-2-CON-RW-ZA-3390 |  | Embankments to the Plot 1 Layer | 21d | 2026-06-15 A | 2026-06-23 A | SDR-2-CON-RW-ZA-2730, SDR-2-CON-RW-ZA-2590 | 100% |  |
| SDR-2-CON-RW-ZA-2740 |  | Embankments to the Plot 2 Layer | 21d | 2026-06-18 A | 2026-06-29 A | SDR-2-CON-RW-ZA-3390 | 100% |  |
|  | 2 | **Base Course** |  | 2026-10-19 | 2026-10-31 |  |  |  |
| SDR-2-CON-RW-ZA-2750 |  | Aggregate base course layer | 11d | 2026-10-19 | 2026-10-31 | SDR-2-CON-RW-ZA-2720 |  | 40d |
|  | 8 | **Demolition Work** |  | 2026-11-01 | 2026-11-02 |  |  |  |
| SDR-2-CON-RW-ZA-2760 |  | Milling of wearing course | 2d | 2026-11-01 | 2026-11-02 | SDR-2-CON-RW-ZA-2750 |  | 40d |
|  | 3 | **Asphalt Works** |  | 2026-11-03 | 2026-12-24 |  |  |  |
| SDR-2-CON-RW-ZA-2770 |  | Asphalt works 1st Layer with MC-01 | 10d | 2026-11-03 | 2026-11-14 | SDR-2-CON-RW-ZA-2750, SDR-2-CON-RW-ZA-2760 |  | 40d |
| SDR-2-CON-RW-ZA-2780 |  | Asphalt works 2nd layer with RC-02 | 14d | 2026-11-15 | 2026-11-30 | SDR-2-CON-RW-ZA-2770 |  | 40d |
| SDR-2-CON-RW-ZA-2850 |  | Asphalt Works 3 rd Layer with RC-02 | 21d | 2026-12-01 | 2026-12-24 | SDR-2-CON-RW-ZA-2780 |  | 40d |
|  | 4 | **Kerbstone Installation** |  | 2026-10-19 | 2027-01-18 |  |  |  |
| SDR-2-CON-RW-ZA-3520 |  | Kerbstone Installation "all Types" Part 1 | 18d | 2026-10-19 | 2026-11-08 | SDR-2-CON-RW-ZA-2720 |  | 64d |
| SDR-2-CON-RW-ZA-2790 |  | Kerbstone Installation "all Types" Part 2 | 21d | 2026-12-26 | 2027-01-18 | SDR-2-CON-RW-ZA-2040 FS+2d, SDR-2-CON-RW-ZA-2850, SDR-2-CON-RW-ZA-2850 FF |  | 40d |
|  | 5 | **Interlock Installation** |  | 2027-01-19 | 2027-02-11 |  |  |  |
| SDR-2-CON-RW-ZA-2800 |  | Interlock Installation | 21d | 2027-01-19 | 2027-02-11 | SDR-2-CON-RW-ZA-2790 |  | 40d |
|  | 6 | **Road Marking** |  | 2027-02-13 | 2027-03-03 |  |  |  |
| SDR-2-CON-RW-ZA-2810 |  | Retroreflective Thermoplastic White Traffic lines | 8d | 2027-02-13 | 2027-02-21 | SDR-2-CON-RW-ZA-2800 |  | 40d |
| SDR-2-CON-RW-ZA-2820 |  | Retroreflective Thermoplastic Yellow, Traffic lines | 8d | 2027-02-23 | 2027-03-03 | SDR-2-CON-RW-ZA-2810 |  | 40d |
|  | 7 | **Traffic Signage** |  | 2027-03-04 | 2027-03-22 |  |  |  |
| SDR-2-CON-RW-ZA-2830 |  | Single post-Traffic signs Installation | 12d | 2027-03-04 | 2027-03-22 | SDR-2-CON-RW-ZA-2820, SDR-2-CON-RW-ZA-2740 |  | 40d |
|  | ZG | **ZONE G** |  | 2026-02-06 | 2027-04-05 |  |  |  |
|  | 14 | **GENERAL WORKS** |  | 2026-02-06 | 2026-03-16 |  |  |  |
|  | 10 | **Cleaning and removal of organic materials in Zone A** |  | 2026-02-06 | 2026-03-06 |  |  |  |
| SDR-2-CON-RW-ZG-1000 |  | Cleaning and removal of organic materials in Zone G | 17d | 2026-02-06 A | 2026-03-06 A | SDR-2-MOBL-1060 | 100% |  |
|  | 12 | **Surveying works Zone A** |  | 2026-03-06 | 2026-03-16 |  |  |  |
| SDR-2-CON-RW-ZG-1010 |  | Surveying works Zone G | 16d | 2026-03-06 A | 2026-03-16 A | SDR-2-CON-RW-ZG-1000 | 100% |  |
|  | 5 | **ROAD WORKS IN ( PH2-COL-MC50 )** |  | 2026-03-28 | 2027-04-03 |  |  |  |
|  | 1 | **Earth Works Road** |  | 2026-04-04 | 2026-04-27 |  |  |  |
| SDR-2-CON-RW-ZG-1020 |  | Roadway Excavation and cuttings | 21d | 2026-04-04 A | 2026-04-27 A | SDR-2-CON-RW-ZG-1010 | 100% |  |

| ID | WBS | Task | Duration | Start | Finish | Predecessors | Complete | Total float |
| --- | --- | --- | --- | --- | --- | --- | --- | --- |
|  | 10 | **Backfilling Works** |  | 2026-03-28 | 2026-07-15 |  |  |  |
| SDR-2-CON-RW-ZG-2220 |  | Embankments to the Road 1 Layer | 21d | 2026-03-28 A | 2026-05-21 A | SDR-2-CON-RW-ZG-1020 | 100% |  |
| SDR-2-CON-RW-ZG-2230 |  | Embankments to the Road 2 Layer | 21d | 2026-05-23 A | 2026-06-03 A | SDR-2-CON-RW-ZG-2220 | 100% |  |
| SDR-2-CON-RW-ZG-2240 |  | Embankments to the Road 3 Layer | 21d | 2026-06-04 A | 2026-07-01 A | SDR-2-CON-RW-ZG-2230 | 100% |  |
| SDR-2-CON-RW-ZG-1030 |  | Embankments to the Road 4 Layer | 21d | 2026-07-02 A | 2026-07-15 A | SDR-2-CON-RW-ZG-2240 FS+6d | 100% |  |
|  | 11 | **Subgrade** |  | 2026-07-16 | 2026-10-01 |  |  |  |
| SDR-2-CON-RW-ZG-1040 |  | Subgrade layer works | 21d | 2026-07-16 A | 2026-10-01 A | SDR-2-CON-RW-ZG-1030 | 100% |  |
|  | 9 | **Earth Works Plot** |  | 2026-06-23 | 2026-11-08 |  |  |  |
| SDR-2-CON-RW-ZG-1050 |  | Plot Excavation for cuttings (all types of soil) | 21d | 2026-06-23 A | 2026-10-05 | SDR-2-CON-RW-ZG-1020, SDR-2-CON-RW-ZG-1040 FF | 80% | 67d |
| SDR-2-CON-RW-ZG-2250 |  | Embankments to the Plot 1 Layer | 21d | 2026-07-21 A | 2026-08-03 A | SDR-2-CON-RW-ZG-1050 SS | 100% |  |
| SDR-2-CON-RW-ZG-2260 |  | Embankments to the Plot 2 Layer | 21d | 2026-07-21 A | 2026-11-08 | SDR-2-CON-RW-ZG-2250, SDR-2-CON-RW-ZA-3520 FF | 90% | 64d |
| SDR-2-CON-RW-ZG-1060 |  | Embankments to the Plot 3 Layer | 21d | 2026-08-01 A | 2026-11-08 | SDR-2-CON-RW-ZG-2260 FF | 60% | 64d |
|  | 2 | **Base Course** |  | 2026-08-20 | 2026-10-05 |  |  |  |
| SDR-2-CON-RW-ZG-1070 |  | Aggregate base course layer | 21d | 2026-08-20 A | 2026-10-05 A | SDR-2-CON-RW-ZG-1040 FF | 100% |  |
|  | 8 | **Demolition Work** |  | 2026-10-05 | 2026-10-27 |  |  |  |
| SDR-2-CON-RW-ZG-1080 |  | Removal of curbstone | 11d | 2026-10-05 | 2026-10-17 | SDR-2-CON-RW-ZG-1070 |  | 7d |
| SDR-2-CON-RW-ZG-1090 |  | Milling of wearing course | 9d | 2026-10-18 | 2026-10-27 | SDR-2-CON-RW-ZG-1080 |  | 7d |
|  | 3 | **Asphalt Works** |  | 2026-10-05 | 2026-12-13 |  |  |  |
| SDR-2-CON-RW-ZG-1100 |  | Asphalt works 1st Layer with MC-01 | 19d | 2026-10-05 A | 2026-11-18 | SDR-2-CON-RW-ZG-2550, SDR-2-CON-RW-ZG-1070, SDR-2-CON-RW-ZG-1090 | 10% | 7d |
| SDR-2-CON-RW-ZG-1110 |  | Asphalt works 2nd layer with RC-02 | 21d | 2026-11-19 | 2026-12-13 | SDR-2-CON-RW-ZG-1100 |  | 7d |
|  | 4 | **Kerbstone Installation** |  | 2026-10-05 | 2027-01-06 |  |  |  |
| SDR-2-CON-RW-ZG-2550 |  | Kerbstone Installation "all Types" Part 1 | 18d | 2026-10-05 | 2026-10-25 | SDR-2-CON-RW-ZG-1070 |  | 9d |
| SDR-2-CON-RW-ZG-1120 |  | Kerbstone Installation "all Types" Part 2 | 21d | 2026-12-14 | 2027-01-06 | SDR-2-CON-RW-ZA-3350, SDR-2-CON-RW-ZG-1110 |  | 7d |
|  | 5 | **Interlock Installation** |  | 2027-01-07 | 2027-01-31 |  |  |  |
| SDR-2-CON-RW-ZG-1130 |  | Interlock Installation | 21d | 2027-01-07 | 2027-01-31 | SDR-2-CON-RW-ZA-2600, SDR-2-CON-RW-ZG-1120 |  | 7d |
|  | 6 | **Road Marking** |  | 2027-02-01 | 2027-03-06 |  |  |  |
| SDR-2-CON-RW-ZG-1140 |  | Retroreflective Thermoplastic White Traffic lines | 14d | 2027-02-01 | 2027-02-16 | SDR-2-CON-RW-ZG-1130 |  | 7d |
| SDR-2-CON-RW-ZG-1150 |  | Retroreflective Thermoplastic Yellow, Traffic lines | 14d | 2027-02-17 | 2027-03-06 | SDR-2-CON-RW-ZG-1140 |  | 7d |
|  | 7 | **Traffic Signage** |  | 2027-03-07 | 2027-04-03 |  |  |  |
| SDR-2-CON-RW-ZG-1160 |  | Single post-Traffic signs Installation | 20d | 2027-03-07 | 2027-04-03 | SDR-2-CON-RW-ZG-1150, SDR-2-CON-RW-ZG-1060 |  | 7d |
|  | 1 | **ROAD WORKS IN ( PH2-G-MCA0 )** |  | 2026-03-30 | 2027-02-20 |  |  |  |
|  | 1 | **Earth Works Road** |  | 2026-03-30 | 2026-05-03 |  |  |  |
| SDR-2-CON-RW-ZG-1320 |  | Roadway Excavation and cuttings | 20d | 2026-03-30 A | 2026-05-03 A | SDR-2-CON-RW-ZG-1170 SS+3d | 100% |  |
|  | 10 | **Backfilling Works** |  | 2026-03-30 | 2026-06-13 |  |  |  |
| SDR-2-CON-RW-ZG-2310 |  | Embankments to the Road 1 Layer | 21d | 2026-03-30 A | 2026-04-30 A | SDR-2-CON-RW-ZG-1320 | 100% |  |
| SDR-2-CON-RW-ZG-2320 |  | Embankments to the Road 2 Layer | 21d | 2026-05-02 A | 2026-05-18 A | SDR-2-CON-RW-ZG-2310 | 100% |  |
| SDR-2-CON-RW-ZG-2330 |  | Embankments to the Road 3 Layer | 21d | 2026-05-19 A | 2026-06-01 A | SDR-2-CON-RW-ZG-2320 FS+5d | 100% |  |
| SDR-2-CON-RW-ZG-1330 |  | Embankments to the Road 4 Layer | 21d | 2026-06-02 A | 2026-06-13 A | SDR-2-CON-RW-ZG-2330 FS+6d, SDR-2-PRO-DEL-E-1010 | 100% |  |
|  | 11 | **Subgrade** |  | 2026-08-20 | 2026-08-31 |  |  |  |
| SDR-2-CON-RW-ZG-1340 |  | Subgrade layer works | 21d | 2026-08-20 A | 2026-08-31 A | SDR-2-CON-RW-ZG-1330 FS+5d | 100% |  |
|  | 9 | **Earth Works Plot** |  | 2026-05-11 | 2026-06-15 |  |  |  |
| SDR-2-CON-RW-ZG-1350 |  | Plot Excavation for cuttings (all types of soil) | 21d | 2026-05-11 A | 2026-05-23 A | SDR-2-CON-RW-ZG-1320, SDR-2-CON-RW-ZG-1340 | 100% |  |
| SDR-2-CON-RW-ZG-2340 |  | Embankments to the Plot 1 Layer | 21d | 2026-05-23 A | 2026-06-04 A | SDR-2-CON-RW-ZG-1350 | 100% |  |
| SDR-2-CON-RW-ZG-1360 |  | Embankments to the Plot 2 Layer | 21d | 2026-06-06 A | 2026-06-15 A | SDR-2-CON-RW-ZG-2340, SDR-2-CON-RW-ZG-2300 | 100% |  |
|  | 2 | **Base Course** |  | 2026-08-22 | 2026-09-26 |  |  |  |
| SDR-2-CON-RW-ZG-1370 |  | Aggregate base course layer | 21d | 2026-08-22 A | 2026-09-26 A | SDR-2-CON-RW-ZG-1340 | 100% |  |
|  | 8 | **Demolition Work** |  | 2026-10-05 | 2026-10-22 |  |  |  |
| SDR-2-CON-RW-ZG-1380 |  | Removal of curbstone | 9d | 2026-10-05 | 2026-10-14 | SDR-2-CON-RW-ZG-1370 |  | 48d |
| SDR-2-CON-RW-ZG-1390 |  | Milling of wearing course | 7d | 2026-10-15 | 2026-10-22 | SDR-2-CON-RW-ZG-1380 |  | 48d |
|  | 3 | **Asphalt Works** |  | 2026-10-05 | 2026-11-08 |  |  |  |
| SDR-2-CON-RW-ZG-1400 |  | Asphalt works 1st Layer with MC-01 | 12d | 2026-10-05 A | 2026-10-18 | SDR-2-CON-RW-ZG-1370 | 25% | 61d |
| SDR-2-CON-RW-ZG-1410 |  | Asphalt works 2nd layer with RC-02 | 18d | 2026-10-19 | 2026-11-08 | SDR-2-CON-RW-ZG-1400 |  | 61d |
|  | 4 | **Kerbstone Installation** |  | 2026-10-26 | 2026-12-02 |  |  |  |
| SDR-2-CON-RW-ZG-2570 |  | Kerbstone Installation "all Types" Part 1 | 18d | 2026-10-26 | 2026-11-15 | SDR-2-CON-RW-ZG-1340, SDR-2-CON-RW-ZG-2560 |  | 34d |
| SDR-2-CON-RW-ZG-1420 |  | Kerbstone Installation "all Types" Part 2 | 21d | 2026-11-09 | 2026-12-02 | SDR-2-CON-RW-ZG-1390, SDR-2-CON-RW-ZG-1410 |  | 61d |
|  | 5 | **Interlock Installation** |  | 2026-12-03 | 2026-12-26 |  |  |  |
| SDR-2-CON-RW-ZG-1430 |  | Interlock Installation | 20d | 2026-12-03 | 2026-12-26 | SDR-2-CON-RW-ZG-1420 |  | 61d |
|  | 6 | **Road Marking** |  | 2026-12-27 | 2027-01-27 |  |  |  |
| SDR-2-CON-RW-ZG-1440 |  | Retroreflective Thermoplastic White Traffic lines | 14d | 2026-12-27 | 2027-01-11 | SDR-2-CON-RW-ZG-1430 |  | 61d |
| SDR-2-CON-RW-ZG-1450 |  | Retroreflective Thermoplastic Yellow, Traffic lines | 14d | 2027-01-12 | 2027-01-27 | SDR-2-CON-RW-ZG-1440, SDR-2-CON-RW-ZG-1360 SS |  | 61d |
|  | 7 | **Traffic Signage** |  | 2027-01-28 | 2027-02-20 |  |  |  |
| SDR-2-CON-RW-ZG-1460 |  | Single post-Traffic signs Installation | 20d | 2027-01-28 | 2027-02-20 | SDR-2-CON-RW-ZG-1360, SDR-2-CON-RW-ZG-1450 |  | 61d |
|  | 6 | **ROAD WORKS IN ( PH2-ART-MC00 )** |  | 2026-03-26 | 2027-04-05 |  |  |  |
|  | 1 | **Earth Works Road** |  | 2026-03-26 | 2026-05-29 |  |  |  |
| SDR-2-CON-RW-ZG-1170 |  | Roadway Excavation and cuttings | 20d | 2026-03-26 A | 2026-05-29 A | SDR-2-CON-RW-ZG-1020 SS+3d | 100% |  |
|  | 10 | **Backfilling Works** |  | 2026-03-28 | 2026-06-30 |  |  |  |
| SDR-2-CON-RW-ZG-2270 |  | Embankments to the Road 1 Layer | 21d | 2026-03-28 A | 2026-06-09 A | SDR-2-CON-RW-ZG-1170 | 100% |  |
| SDR-2-CON-RW-ZG-2280 |  | Embankments to the Road 2 Layer | 21d | 2026-05-25 A | 2026-06-22 A | SDR-2-CON-RW-ZG-2270 | 100% |  |
| SDR-2-CON-RW-ZG-1180 |  | Embankments to the Road 4 Layer | 21d | 2026-06-09 A | 2026-06-30 A | SDR-2-CON-RW-ZG-2290 | 100% |  |
| SDR-2-CON-RW-ZG-2290 |  | Embankments to the Road 3 Layer | 21d | 2026-06-17 A | 2026-06-25 A | SDR-2-CON-RW-ZG-2280 | 100% |  |

| ID | WBS | Task | Duration | Start | Finish | Predecessors | Complete | Total float |
| --- | --- | --- | --- | --- | --- | --- | --- | --- |
|  | 11 | **Subgrade** |  | 2026-08-10 | 2026-08-24 |  |  |  |
| SDR-2-CON-RW-ZG-1190 |  | Subgrade layer works | 21d | 2026-08-10 A | 2026-08-24 A | SDR-2-CON-RW-ZG-1180 | 100% |  |
|  | 9 | **Earth Works Plot** |  | 2026-07-01 | 2026-07-30 |  |  |  |
| SDR-2-CON-RW-ZG-1200 |  | Plot Excavation for cuttings (all types of soil) | 21d | 2026-07-01 A | 2026-07-20 A | SDR-2-CON-RW-ZG-1170, SDR-2-CON-RW-ZG-1190 | 100% |  |
| SDR-2-CON-RW-ZG-2300 |  | Embankments to the Plot 1 Layer | 21d | 2026-07-11 A | 2026-07-21 A | SDR-2-CON-RW-ZG-1200 FS+4d, SDR-2-CON-RW-ZG-1050 SS | 100% |  |
| SDR-2-CON-RW-ZG-1210 |  | Embankments to the Plot 2 Layer | 21d | 2026-07-20 A | 2026-07-30 A | SDR-2-CON-RW-ZG-2300 | 100% |  |
|  | 2 | **Base Course** |  | 2026-08-20 | 2026-10-05 |  |  |  |
| SDR-2-CON-RW-ZG-1220 |  | Aggregate base course layer | 21d | 2026-08-20 A | 2026-10-05 A | SDR-2-CON-RW-ZG-1190 | 100% |  |
|  | 8 | **Demolition Work** |  | 2026-10-05 | 2026-10-28 |  |  |  |
| SDR-2-CON-RW-ZG-1230 |  | Removal of curbstone | 8d | 2026-10-05 | 2026-10-13 | SDR-2-CON-RW-ZG-1220 |  | 28d |
| SDR-2-CON-RW-ZG-1240 |  | Milling of wearing course | 13d | 2026-10-14 | 2026-10-28 | SDR-2-CON-RW-ZG-1230 |  | 28d |
|  | 3 | **Asphalt Works** |  | 2026-10-05 | 2026-12-16 |  |  |  |
| SDR-2-CON-RW-ZG-1250 |  | Asphalt works 1st Layer with MC-01 | 21d | 2026-10-05 A | 2026-11-22 | SDR-2-CON-RW-ZG-1220, SDR-2-CON-RW-ZG-1240 | 10% | 28d |
| SDR-2-CON-RW-ZG-1260 |  | Asphalt works 2nd layer with RC-02 | 21d | 2026-11-23 | 2026-12-16 | SDR-2-CON-RW-ZG-2550, SDR-2-CON-RW-ZG-1250 |  | 28d |
|  | 4 | **Kerbstone Installation** |  | 2026-10-05 | 2027-01-09 |  |  |  |
| SDR-2-CON-RW-ZG-2560 |  | Kerbstone Installation "all Types" Part 1 | 18d | 2026-10-05 | 2026-10-25 | SDR-2-CON-RW-ZG-1190 |  | 34d |
| SDR-2-CON-RW-ZG-1270 |  | Kerbstone Installation "all Types" Part 2 | 20d | 2026-12-17 | 2027-01-09 | SDR-2-CON-RW-ZG-1260 |  | 28d |
|  | 5 | **Interlock Installation** |  | 2027-01-10 | 2027-02-02 |  |  |  |
| SDR-2-CON-RW-ZG-1280 |  | Interlock Installation | 21d | 2027-01-10 | 2027-02-02 | SDR-2-CON-RW-ZG-1270 |  | 28d |
|  | 6 | **Road Marking** |  | 2027-02-03 | 2027-03-08 |  |  |  |
| SDR-2-CON-RW-ZG-1290 |  | Retroreflective Thermoplastic White Traffic lines | 14d | 2027-02-03 | 2027-02-18 | SDR-2-CON-RW-ZG-1280 |  | 28d |
| SDR-2-CON-RW-ZG-1300 |  | Retroreflective Thermoplastic Yellow, Traffic lines | 14d | 2027-02-20 | 2027-03-08 | SDR-2-CON-RW-ZG-1290 |  | 28d |
|  | 7 | **Traffic Signage** |  | 2027-03-14 | 2027-04-05 |  |  |  |
| SDR-2-CON-RW-ZG-1310 |  | Single post-Traffic signs Installation | 20d | 2027-03-14 | 2027-04-05 | SDR-2-CON-RW-ZG-1300, SDR-2-CON-RW-ZG-1210 |  | 28d |
|  | 8 | **ROAD WORKS IN ( PH2-G-MCE0 )** |  | 2026-03-15 | 2027-03-29 |  |  |  |
|  | 1 | **Earth Works Road** |  | 2026-04-14 | 2026-04-30 |  |  |  |
| SDR-2-CON-RW-ZG-1470 |  | Roadway Excavation and cuttings | 21d | 2026-04-14 A | 2026-04-30 A | SDR-2-CON-RW-ZG-1320 SS+3d | 100% |  |
|  | 10 | **Backfilling Works** |  | 2026-03-15 | 2026-05-13 |  |  |  |
| SDR-2-CON-RW-ZG-2350 |  | Embankments to the Road 1 Layer | 21d | 2026-03-15 A | 2026-04-01 A | SDR-2-CON-RW-ZG-1470 | 100% |  |
| SDR-2-CON-RW-ZG-2360 |  | Embankments to the Road 2 Layer | 21d | 2026-04-02 A | 2026-04-07 A | SDR-2-CON-RW-ZG-2350 | 100% |  |
| SDR-2-CON-RW-ZG-2370 |  | Embankments to the Road 3 Layer | 21d | 2026-04-08 A | 2026-04-15 A | SDR-2-CON-RW-ZG-2360 | 100% |  |
| SDR-2-CON-RW-ZG-1480 |  | Embankments to the Road 4 Layer | 21d | 2026-04-14 A | 2026-05-13 A | SDR-2-CON-RW-ZG-2370 FS+6d, SDR-2-PRO-DEL-E-1010 | 100% |  |
|  | 11 | **Subgrade** |  | 2026-08-24 | 2026-09-14 |  |  |  |
| SDR-2-CON-RW-ZG-1490 |  | Subgrade layer works | 21d | 2026-08-24 A | 2026-09-14 A | SDR-2-CON-RW-ZG-1480 FS+6d | 100% |  |
|  | 9 | **Earth Works Plot** |  | 2026-05-20 | 2026-07-20 |  |  |  |
| SDR-2-CON-RW-ZG-1500 |  | Plot Excavation for cuttings (all types of soil) | 21d | 2026-05-20 A | 2026-05-31 A | SDR-2-CON-RW-ZG-1470, SDR-2-CON-RW-ZG-1490 | 100% |  |
| SDR-2-CON-RW-ZG-2380 |  | Embankments to the Plot 1 Layer | 21d | 2026-06-04 A | 2026-06-22 A | SDR-2-CON-RW-ZG-1500 | 100% |  |
| SDR-2-CON-RW-ZG-1510 |  | Embankments to the Plot 2 Layer | 21d | 2026-07-13 A | 2026-07-20 A | SDR-2-CON-RW-ZG-2380 FS+2d | 100% |  |
|  | 2 | **Base Course** |  | 2026-09-14 | 2026-09-24 |  |  |  |
| SDR-2-CON-RW-ZG-1520 |  | Aggregate base course layer | 18d | 2026-09-14 A | 2026-09-24 A | SDR-2-CON-RW-ZG-1490 | 100% |  |
|  | 8 | **Demolition Work** |  | 2026-10-05 | 2026-11-21 |  |  |  |
| SDR-2-CON-RW-ZG-1530 |  | Removal of curbstone | 4d | 2026-10-05 | 2026-10-08 | SDR-2-CON-RW-ZG-1520 |  | 66d |
| SDR-2-CON-RW-ZG-1540 |  | Milling of wearing course | 5d | 2026-11-16 | 2026-11-21 | SDR-2-CON-RW-ZG-2570, SDR-2-CON-RW-ZG-1530 |  | 34d |
|  | 3 | **Asphalt Works** |  | 2026-09-26 | 2026-12-08 |  |  |  |
| SDR-2-CON-RW-ZG-1550 |  | Asphalt works 1st Layer with MC-01 | 12d | 2026-09-26 A | 2026-10-01 A | SDR-2-CON-RW-ZG-1520, SDR-2-CON-RW-ZG-1540 | 100% |  |
| SDR-2-CON-RW-ZG-1560 |  | Asphalt works 2nd layer with RC-02 | 15d | 2026-11-22 | 2026-12-08 | SDR-2-CON-RW-ZG-1550 |  | 34d |
|  | 4 | **Kerbstone Installation** |  | 2026-10-05 | 2027-01-02 |  |  |  |
| SDR-2-CON-RW-ZG-2580 |  | Kerbstone Installation "all Types" Part 1 | 18d | 2026-10-05 | 2026-10-25 | SDR-2-CON-RW-ZG-1490 |  | 57d |
| SDR-2-CON-RW-ZG-1570 |  | Kerbstone Installation "all Types" Part 2 | 21d | 2026-12-09 | 2027-01-02 | SDR-2-CON-RW-ZG-1560 |  | 34d |
|  | 5 | **Interlock Installation** |  | 2027-01-03 | 2027-01-26 |  |  |  |
| SDR-2-CON-RW-ZG-1580 |  | Interlock Installation | 21d | 2027-01-03 | 2027-01-26 | SDR-2-CON-RW-ZG-1570 |  | 34d |
|  | 6 | **Road Marking** |  | 2027-01-27 | 2027-03-01 |  |  |  |
| SDR-2-CON-RW-ZG-1590 |  | Retroreflective Thermoplastic White Traffic lines | 14d | 2027-01-27 | 2027-02-11 | SDR-2-CON-RW-ZG-1580 |  | 34d |
| SDR-2-CON-RW-ZG-1600 |  | Retroreflective Thermoplastic Yellow, Traffic lines | 14d | 2027-02-13 | 2027-03-01 | SDR-2-CON-RW-ZG-1590 |  | 34d |
|  | 7 | **Traffic Signage** |  | 2027-03-02 | 2027-03-29 |  |  |  |
| SDR-2-CON-RW-ZG-1610 |  | Single post-Traffic signs Installation | 20d | 2027-03-02 | 2027-03-29 | SDR-2-CON-RW-ZG-1600, SDR-2-CON-RW-ZG-1510 |  | 34d |
|  | 4 | **ROAD WORKS IN ( PH2-G-MCD0 )** |  | 2026-03-21 | 2027-03-18 |  |  |  |
|  | 1 | **Earth Works Road** |  | 2026-03-21 | 2026-04-14 |  |  |  |
| SDR-2-CON-RW-ZG-1620 |  | Roadway Excavation and cuttings | 20d | 2026-03-21 A | 2026-04-14 A | SDR-2-CON-RW-ZG-1470 SS+3d | 100% |  |
|  | 10 | **Backfilling Works** |  | 2026-03-29 | 2026-05-25 |  |  |  |
| SDR-2-CON-RW-ZG-2390 |  | Embankments to the Road 1 Layer | 21d | 2026-03-29 A | 2026-04-15 A | SDR-2-CON-RW-ZG-1620 | 100% |  |
| SDR-2-CON-RW-ZG-2400 |  | Embankments to the Road 2 Layer | 21d | 2026-04-15 A | 2026-05-13 A | SDR-2-CON-RW-ZG-2390 | 100% |  |
| SDR-2-CON-RW-ZG-2410 |  | Embankments to the Road 3 Layer | 21d | 2026-05-16 A | 2026-05-25 A | SDR-2-CON-RW-ZG-2400 | 100% |  |
| SDR-2-CON-RW-ZG-1630 |  | Embankments to the Road 4 Layer | 21d | 2026-05-24 A | 2026-05-24 A | SDR-2-CON-RW-ZG-2410 FS+6d | 100% |  |
|  | 11 | **Subgrade** |  | 2026-09-10 | 2026-09-30 |  |  |  |
| SDR-2-CON-RW-ZG-1640 |  | Subgrade layer works | 21d | 2026-09-10 A | 2026-09-30 A | SDR-2-CON-RW-ZG-1630 FS+4d | 100% |  |
|  | 9 | **Earth Works Plot** |  | 2026-05-18 | 2026-10-25 |  |  |  |
| SDR-2-CON-RW-ZG-1650 |  | Plot Excavation for cuttings (all types of soil) | 21d | 2026-05-18 A | 2026-10-05 | SDR-2-CON-RW-ZG-1640 FF, SDR-2-CON-RW-ZG-1620 | 60% | 74d |
| SDR-2-CON-RW-ZG-2420 |  | Embankments to the Plot 1 Layer | 21d | 2026-06-04 A | 2026-10-25 | SDR-2-CON-RW-ZG-1650 FF, SDR-2-CON-RW-ZG-2580 FF | 80% | 57d |
| SDR-2-CON-RW-ZG-1660 |  | Embankments to the Plot 2 Layer | 21d | 2026-07-07 A | 2026-10-25 | SDR-2-CON-RW-ZG-2380, SDR-2-CON-RW-ZG-2420 FF | 40% | 64d |

| ID | WBS | Task | Duration | Start | Finish | Predecessors | Complete | Total float |
| --- | --- | --- | --- | --- | --- | --- | --- | --- |
|  | 2 | **Base Course** |  | 2026-10-01 | 2026-10-05 |  |  |  |
| SDR-2-CON-RW-ZG-1670 |  | Aggregate base course layer | 16d | 2026-10-01 A | 2026-10-05 A | SDR-2-CON-RW-ZG-1640 | 100% |  |
|  | 8 | **Demolition Work** |  | 2026-10-05 | 2026-10-14 |  |  |  |
| SDR-2-CON-RW-ZG-1680 |  | Removal of curbstone | 4d | 2026-10-05 | 2026-10-08 | SDR-2-CON-RW-ZG-1670 |  | 40d |
| SDR-2-CON-RW-ZG-1690 |  | Milling of wearing course | 5d | 2026-10-10 | 2026-10-14 | SDR-2-CON-RW-ZG-1680 |  | 40d |
|  | 3 | **Asphalt Works** |  | 2026-10-15 | 2026-11-29 |  |  |  |
| SDR-2-CON-RW-ZG-1700 |  | Asphalt works 1st Layer with MC-01 | 18d | 2026-10-15 | 2026-11-04 | SDR-2-CON-RW-ZG-1670, SDR-2-CON-RW-ZG-1690 |  | 40d |
| SDR-2-CON-RW-ZG-1710 |  | Asphalt works 2nd layer with RC-02 | 21d | 2026-11-05 | 2026-11-29 | SDR-2-CON-RW-ZG-1700 |  | 40d |
|  | 4 | **Kerbstone Installation** |  | 2026-10-05 | 2026-12-23 |  |  |  |
| SDR-2-CON-RW-ZG-2590 |  | Kerbstone Installation "all Types" Part 1 | 18d | 2026-10-05 | 2026-10-25 | SDR-2-CON-RW-ZG-1640 |  | 29d |
| SDR-2-CON-RW-ZG-1720 |  | Kerbstone Installation "all Types" Part 2 | 21d | 2026-11-30 | 2026-12-23 | SDR-2-CON-RW-ZG-1710 |  | 40d |
|  | 5 | **Interlock Installation** |  | 2026-12-24 | 2027-01-16 |  |  |  |
| SDR-2-CON-RW-ZG-1730 |  | Interlock Installation | 20d | 2026-12-24 | 2027-01-16 | SDR-2-CON-RW-ZG-1720 |  | 40d |
|  | 6 | **Road Marking** |  | 2027-01-17 | 2027-02-17 |  |  |  |
| SDR-2-CON-RW-ZG-1740 |  | Retroreflective Thermoplastic White Traffic lines | 14d | 2027-01-17 | 2027-02-01 | SDR-2-CON-RW-ZG-1730 |  | 40d |
| SDR-2-CON-RW-ZG-1750 |  | Retroreflective Thermoplastic Yellow, Traffic lines | 14d | 2027-02-02 | 2027-02-17 | SDR-2-CON-RW-ZG-1740, SDR-2-CON-RW-ZG-1660 SS |  | 40d |
|  | 7 | **Traffic Signage** |  | 2027-02-18 | 2027-03-18 |  |  |  |
| SDR-2-CON-RW-ZG-1760 |  | Single post-Traffic signs Installation | 20d | 2027-02-18 | 2027-03-18 | SDR-2-CON-RW-ZG-1660, SDR-2-CON-RW-ZG-1750 |  | 40d |
|  | 2 | **ROAD WORKS IN ( PH2-G-MCF0 )** |  | 2026-03-25 | 2027-03-17 |  |  |  |
|  | 1 | **Earth Works Road** |  | 2026-03-25 | 2026-05-13 |  |  |  |
| SDR-2-CON-RW-ZG-1770 |  | Roadway Excavation and cuttings | 21d | 2026-03-25 A | 2026-05-13 A | SDR-2-CON-RW-ZG-1620 SS+3d | 100% |  |
|  | 10 | **Backfilling Works** |  | 2026-03-25 | 2026-06-18 |  |  |  |
| SDR-2-CON-RW-ZG-2430 |  | Embankments to the Road 1 Layer | 21d | 2026-03-25 A | 2026-04-15 A | SDR-2-CON-RW-ZG-1770 | 100% |  |
| SDR-2-CON-RW-ZG-2440 |  | Embankments to the Road 2 Layer | 21d | 2026-04-07 A | 2026-04-30 A | SDR-2-CON-RW-ZG-2430 | 100% |  |
| SDR-2-CON-RW-ZG-2450 |  | Embankments to the Road 3 Layer | 21d | 2026-05-02 A | 2026-05-21 A | SDR-2-CON-RW-ZG-2440 | 100% |  |
| SDR-2-CON-RW-ZG-1780 |  | Embankments to the Road 4 Layer | 21d | 2026-05-21 A | 2026-06-18 A | SDR-2-CON-RW-ZG-2450 FS+6d | 100% |  |
|  | 11 | **Subgrade** |  | 2026-08-15 | 2026-09-03 |  |  |  |
| SDR-2-CON-RW-ZG-1790 |  | Subgrade layer works | 13d | 2026-08-15 A | 2026-09-03 A | SDR-2-CON-RW-ZG-1780 | 100% |  |
|  | 9 | **Earth Works Plot** |  | 2026-05-04 | 2026-09-07 |  |  |  |
| SDR-2-CON-RW-ZG-1800 |  | Plot Excavation for cuttings (all types of soil) | 21d | 2026-05-04 A | 2026-05-18 A | SDR-2-CON-RW-ZG-1770, SDR-2-CON-RW-ZG-1790 | 100% |  |
| SDR-2-CON-RW-ZG-2460 |  | Embankments to the Plot1 Layer | 21d | 2026-05-18 A | 2026-05-24 A | SDR-2-CON-RW-ZG-1800 | 100% |  |
| SDR-2-CON-RW-ZG-1810 |  | Embankments to the Plot 2 Layer | 21d | 2026-05-24 A | 2026-09-07 A | SDR-2-CON-RW-ZG-2460 | 100% |  |
|  | 2 | **Base Course** |  | 2026-08-31 | 2026-09-14 |  |  |  |
| SDR-2-CON-RW-ZG-1820 |  | Aggregate base course layer | 21d | 2026-08-31 A | 2026-09-14 A | SDR-2-CON-RW-ZG-1790 | 100% |  |
|  | 8 | **Demolition Work** |  | 2026-10-05 | 2026-11-02 |  |  |  |
| SDR-2-CON-RW-ZG-1830 |  | Removal of curbstone | 7d | 2026-10-05 | 2026-10-12 | SDR-2-CON-RW-ZG-1820 |  | 40d |
| SDR-2-CON-RW-ZG-1840 |  | Milling of wearing course | 7d | 2026-10-26 | 2026-11-02 | SDR-2-CON-RW-ZG-2590, SDR-2-CON-RW-ZG-1830 |  | 29d |
|  | 3 | **Asphalt Works** |  | 2026-09-15 | 2026-11-26 |  |  |  |
| SDR-2-CON-RW-ZG-1850 |  | Asphalt works 1st Layer with MC-01 | 17d | 2026-09-15 A | 2026-09-24 A | SDR-2-CON-RW-ZG-1820 FF, SDR-2-CON-RW-ZG-1840 FF | 100% |  |
| SDR-2-CON-RW-ZG-1860 |  | Asphalt works 2nd layer with RC-02 | 21d | 2026-11-03 | 2026-11-26 | SDR-2-CON-RW-ZG-1850 |  | 29d |
|  | 4 | **Kerbstone Installation** |  | 2026-10-05 | 2026-12-21 |  |  |  |
| SDR-2-CON-RW-ZG-2600 |  | Kerbstone Installation "all Types" Part 1 | 18d | 2026-10-05 | 2026-10-25 | SDR-2-CON-RW-ZG-1790 |  | 27d |
| SDR-2-CON-RW-ZG-1870 |  | Kerbstone Installation "all Types" Part 2 | 21d | 2026-11-28 | 2026-12-21 | SDR-2-CON-RW-ZG-1860 |  | 29d |
|  | 5 | **Interlock Installation** |  | 2026-12-22 | 2027-01-14 |  |  |  |
| SDR-2-CON-RW-ZG-1880 |  | Interlock Installation | 21d | 2026-12-22 | 2027-01-14 | SDR-2-CON-RW-ZG-1870 |  | 29d |
|  | 6 | **Road Marking** |  | 2027-01-16 | 2027-02-16 |  |  |  |
| SDR-2-CON-RW-ZG-1890 |  | Retroreflective Thermoplastic White Traffic lines | 14d | 2027-01-16 | 2027-01-31 | SDR-2-CON-RW-ZG-1880 |  | 29d |
| SDR-2-CON-RW-ZG-1900 |  | Retroreflective Thermoplastic Yellow, Traffic lines | 14d | 2027-02-01 | 2027-02-16 | SDR-2-CON-RW-ZG-1890, SDR-2-CON-RW-ZG-1810 SS |  | 29d |
|  | 7 | **Traffic Signage** |  | 2027-02-17 | 2027-03-17 |  |  |  |
| SDR-2-CON-RW-ZG-1910 |  | Single post-Traffic signs Installation | 20d | 2027-02-17 | 2027-03-17 | SDR-2-CON-RW-ZG-1810, SDR-2-CON-RW-ZG-1900 |  | 29d |
|  | 3 | **ROAD WORKS IN ( PH2-G-MCG0 )** |  | 2026-03-15 | 2027-03-20 |  |  |  |
|  | 1 | **Earth Works Road** |  | 2026-03-26 | 2026-05-13 |  |  |  |
| SDR-2-CON-RW-ZG-1920 |  | Roadway Excavation and cuttings | 21d | 2026-03-26 A | 2026-05-13 A | SDR-2-CON-RW-ZG-1770 SS | 100% |  |
|  | 10 | **Backfilling Works** |  | 2026-03-15 | 2026-07-11 |  |  |  |
| SDR-2-CON-RW-ZG-2470 |  | Embankments to the Road 1 Layer | 21d | 2026-03-15 A | 2026-04-02 A | SDR-2-CON-RW-ZG-1920 | 100% |  |
| SDR-2-CON-RW-ZG-2480 |  | Embankments to the Road 2 Layer | 21d | 2026-04-07 A | 2026-04-16 A | SDR-2-CON-RW-ZG-2470 | 100% |  |
| SDR-2-CON-RW-ZG-2490 |  | Embankments to the Road 3 Layer | 21d | 2026-04-25 A | 2026-05-07 A | SDR-2-CON-RW-ZG-2480 | 100% |  |
| SDR-2-CON-RW-ZG-1930 |  | Embankments to the Road 4 Layer | 21d | 2026-05-02 A | 2026-07-11 A | SDR-2-CON-RW-ZG-2490 FS+3d | 100% |  |
|  | 11 | **Subgrade** |  | 2026-08-15 | 2026-08-31 |  |  |  |
| SDR-2-CON-RW-ZG-1940 |  | Subgrade layer works | 21d | 2026-08-15 A | 2026-08-31 A | SDR-2-CON-RW-ZG-1930 FS+3d | 100% |  |
|  | 9 | **Earth Works Plot** |  | 2026-05-18 | 2026-10-06 |  |  |  |
| SDR-2-CON-RW-ZG-1950 |  | Plot Excavation for cuttings (all types of soil) | 21d | 2026-05-18 A | 2026-10-05 | SDR-2-CON-RW-ZG-1920, SDR-2-CON-RW-ZG-1940 | 45% | 43d |
| SDR-2-CON-RW-ZG-2500 |  | Embankments to the Plot 1 Layer | 21d | 2026-06-11 A | 2026-10-05 | SDR-2-CON-RW-ZG-1950 FF | 80% | 61d |
| SDR-2-CON-RW-ZG-1960 |  | Embankments to the Plot 2 Layer | 21d | 2026-06-22 A | 2026-10-06 | SDR-2-CON-RW-ZG-2500 | 45% | 95d |
|  | 2 | **Base Course** |  | 2026-08-27 | 2026-09-03 |  |  |  |
| SDR-2-CON-RW-ZG-1970 |  | Aggregate base course layer | 21d | 2026-08-27 A | 2026-09-03 A | SDR-2-CON-RW-ZG-1940 | 100% |  |
|  | 8 | **Demolition Work** |  | 2026-10-05 | 2026-11-10 |  |  |  |
| SDR-2-CON-RW-ZG-1980 |  | Removal of curbstone | 8d | 2026-10-05 | 2026-10-13 | SDR-2-CON-RW-ZG-1970, SDR-2-CON-RW-ZG-1950 SS |  | 43d |
| SDR-2-CON-RW-ZG-1990 |  | Milling of wearing course | 8d | 2026-11-02 | 2026-11-10 | SDR-2-CON-RW-ZG-2610, SDR-2-CON-RW-ZG-2600 FS+6d, SDR-2-CON-RW-ZG-1980 |  | 27d |
|  | 3 | **Asphalt Works** |  | 2026-09-05 | 2026-11-29 |  |  |  |

| ID | WBS | Task | Duration | Start | Finish | Predecessors | Complete | Total float |
| --- | --- | --- | --- | --- | --- | --- | --- | --- |
| SDR-2-CON-RW-ZG-2000 |  | Asphalt works 1st Layer with MC-01 | 12d | 2026-09-05 A | 2026-09-24 A | SDR-2-CON-RW-ZG-1970, SDR-2-CON-RW-ZG-1990 FF | 100% |  |
| SDR-2-CON-RW-ZG-2010 |  | Asphalt works 2nd layer with RC-02 | 16d | 2026-11-11 | 2026-11-29 | SDR-2-CON-RW-ZG-2460, SDR-2-CON-RW-ZG-2000 |  | 27d |
|  | 4 | **Kerbstone Installation** |  | 2026-10-05 | 2026-12-23 |  |  |  |
| SDR-2-CON-RW-ZG-2610 |  | Kerbstone Installation "all Types" Part 1 | 18d | 2026-10-05 | 2026-10-25 | SDR-2-CON-RW-ZG-1940 |  | 33d |
| SDR-2-CON-RW-ZG-2020 |  | Kerbstone Installation "all Types" Part 2 | 21d | 2026-11-30 | 2026-12-23 | SDR-2-CON-RW-ZG-1810, SDR-2-CON-RW-ZG-2420, SDR-2-CON-RW-ZG-2010 |  | 27d |
|  | 5 | **Interlock Installation** |  | 2026-12-24 | 2027-01-17 |  |  |  |
| SDR-2-CON-RW-ZG-2030 |  | Interlock Installation | 21d | 2026-12-24 | 2027-01-17 | SDR-2-CON-RW-ZG-2020, SDR-2-CON-RW-ZG-1960 SS |  | 27d |
|  | 6 | **Road Marking** |  | 2027-01-18 | 2027-02-18 |  |  |  |
| SDR-2-CON-RW-ZG-2040 |  | Retroreflective Thermoplastic White Traffic lines | 14d | 2027-01-18 | 2027-02-02 | SDR-2-CON-RW-ZG-2030 |  | 27d |
| SDR-2-CON-RW-ZG-2050 |  | Retroreflective Thermoplastic Yellow, Traffic lines | 14d | 2027-02-03 | 2027-02-18 | SDR-2-CON-RW-ZG-2040 |  | 27d |
|  | 7 | **Traffic Signage** |  | 2027-02-20 | 2027-03-20 |  |  |  |
| SDR-2-CON-RW-ZG-2060 |  | Single post-Traffic signs Installation | 20d | 2027-02-20 | 2027-03-20 | SDR-2-CON-RW-ZG-1960, SDR-2-CON-RW-ZG-2050 |  | 27d |
|  | 7 | **ROAD WORKS IN ( PH2-G-MCZ0 )** |  | 2026-03-29 | 2027-03-20 |  |  |  |
|  | 1 | **Earth Works Road** |  | 2026-03-29 | 2026-05-14 |  |  |  |
| SDR-2-CON-RW-ZG-2070 |  | Roadway Excavation and cuttings | 21d | 2026-03-29 A | 2026-05-14 A | SDR-2-CON-RW-ZG-1920 SS | 100% |  |
|  | 10 | **Backfilling Works** |  | 2026-03-29 | 2026-07-08 |  |  |  |
| SDR-2-CON-RW-ZG-2510 |  | Embankments to the Road 1 Layer | 21d | 2026-03-29 A | 2026-04-08 A | SDR-2-CON-RW-ZG-2070 | 100% |  |
| SDR-2-CON-RW-ZG-2520 |  | Embankments to the Road 2 Layer | 21d | 2026-04-28 A | 2026-05-24 A | SDR-2-CON-RW-ZG-2510 | 100% |  |
| SDR-2-CON-RW-ZG-2530 |  | Embankments to the Road 3 Layer | 21d | 2026-05-18 A | 2026-05-31 A | SDR-2-CON-RW-ZG-2520 | 100% |  |
| SDR-2-CON-RW-ZG-2080 |  | Embankments to the Road 4 Layer | 21d | 2026-05-24 A | 2026-07-08 A | SDR-2-CON-RW-ZG-2530 | 100% |  |
|  | 11 | **Subgrade** |  | 2026-08-20 | 2026-09-09 |  |  |  |
| SDR-2-CON-RW-ZG-2090 |  | Subgrade layer works | 21d | 2026-08-20 A | 2026-09-09 A | SDR-2-CON-RW-ZG-2080 | 100% |  |
|  | 9 | **Earth Works Plot** |  | 2026-04-30 | 2026-05-24 |  |  |  |
| SDR-2-CON-RW-ZG-2100 |  | Plot Excavation for cuttings (all types of soil) | 21d | 2026-04-30 A | 2026-05-10 A | SDR-2-CON-RW-ZG-2070, SDR-2-CON-RW-ZG-2090 | 100% |  |
| SDR-2-CON-RW-ZG-2540 |  | Embankments to the Plot 1 Layer | 21d | 2026-05-10 A | 2026-05-17 A | SDR-2-CON-RW-ZG-2070, SDR-2-CON-RW-ZG-2100 | 100% |  |
| SDR-2-CON-RW-ZG-2110 |  | Embankments to the Plot 2 Layer | 21d | 2026-05-17 A | 2026-05-24 A | SDR-2-CON-RW-ZG-2540 | 100% |  |
|  | 2 | **Base Course** |  | 2026-09-10 | 2026-09-17 |  |  |  |
| SDR-2-CON-RW-ZG-2120 |  | Aggregate base course layer | 21d | 2026-09-10 A | 2026-09-17 A | SDR-2-CON-RW-ZG-2090 | 100% |  |
|  | 8 | **Demolition Work** |  | 2026-10-27 | 2026-11-14 |  |  |  |
| SDR-2-CON-RW-ZG-2130 |  | Removal of curbstone | 5d | 2026-10-27 | 2026-11-02 | SDR-2-PRO-DEL-E-1190, SDR-2-CON-RW-ZG-2120 |  | 27.1d |
| SDR-2-CON-RW-ZG-2140 |  | Milling of wearing course | 10d | 2026-11-02 | 2026-11-14 | SDR-2-CON-RW-ZG-2130, SDR-2-CON-RW-ZG-2100 |  | 27.1d |
|  | 3 | **Asphalt Works** |  | 2026-09-14 | 2026-11-29 |  |  |  |
| SDR-2-CON-RW-ZG-2150 |  | Asphalt works 1st Layer with MC-01 | 12d | 2026-09-14 A | 2026-09-26 A | SDR-2-CON-RW-ZG-2120, SDR-2-CON-RW-ZG-2140 FF | 100% |  |
| SDR-2-CON-RW-ZG-2160 |  | Asphalt works 2nd layer with RC-02 | 13d | 2026-11-14 | 2026-11-29 | SDR-2-CON-RW-ZG-2150 |  | 27.1d |
|  | 4 | **Kerbstone Installation** |  | 2026-10-05 | 2026-12-23 |  |  |  |
| SDR-2-CON-RW-ZG-2620 |  | Kerbstone Installation "all Types" Part 1 | 18d | 2026-10-05 | 2026-10-25 | SDR-2-CON-RW-ZG-2120 |  | 57d |
| SDR-2-CON-RW-ZG-2170 |  | Kerbstone Installation "all Types" Part 2 | 21d | 2026-11-29 | 2026-12-23 | SDR-2-CON-RW-ZG-2160, SDR-2-CON-RW-ZG-2620 |  | 27.1d |
|  | 5 | **Interlock Installation** |  | 2026-12-23 | 2027-01-17 |  |  |  |
| SDR-2-CON-RW-ZG-2180 |  | Interlock Installation | 21d | 2026-12-23 | 2027-01-17 | SDR-2-CON-RW-ZG-2170 |  | 27.1d |
|  | 6 | **Road Marking** |  | 2027-01-17 | 2027-02-18 |  |  |  |
| SDR-2-CON-RW-ZG-2190 |  | Retroreflective Thermoplastic White Traffic lines | 14d | 2027-01-17 | 2027-02-02 | SDR-2-CON-RW-ZG-2180 |  | 27.1d |
| SDR-2-CON-RW-ZG-2200 |  | Retroreflective Thermoplastic Yellow, Traffic lines | 14d | 2027-02-02 | 2027-02-18 | SDR-2-CON-RW-ZG-2190, SDR-2-CON-RW-ZG-2110 SS |  | 27.1d |
|  | 7 | **Traffic Signage** |  | 2027-02-18 | 2027-03-20 |  |  |  |
| SDR-2-CON-RW-ZG-2210 |  | Single post-Traffic signs Installation | 20d | 2027-02-18 | 2027-03-20 | SDR-2-CON-RW-ZG-2110, SDR-2-CON-RW-ZG-2200 |  | 27.1d |
|  | ST | **Storm Water Drainage Network** |  | 2026-03-24 | 2027-05-08 |  |  |  |
|  | ZA | **ZONE A** |  | 2026-03-24 | 2027-05-08 |  |  |  |
|  | 11 | **STORM WATER LINE IN ( PH2-A-MCB0 )** |  | 2026-05-19 | 2027-03-03 |  |  |  |
|  | 8 | **Pipes Works** |  | 2026-05-19 | 2027-01-18 |  |  |  |
|  | 1 | **Excavation** |  | 2026-05-19 | 2026-07-07 |  |  |  |
| SDR-2-CON-ST-ZA-6900 |  | Excavation for GRP Pipes Section 1 | 21d | 2026-05-19 A | 2026-05-31 A | SDR-2-CON-RW-ZA-2870, SDR-2-ENG-APP-M-1130, SDR-2-PRO-MSS-C-1080 FS+2d, SDR-2-PRO-ST-M-1000, SDR-2-PRO-DEL-M-1040 SS, SDR-2-PRO-DES-C-1030 SS | 100% |  |
| SDR-2-CON-ST-ZA-6360 |  | Excavation for GRP Pipes Section 2 | 21d | 2026-06-01 A | 2026-06-08 A | SDR-2-CON-ST-ZA-6900 | 100% |  |
| SDR-2-CON-ST-ZA-1000 |  | Excavation for GRP Pipes Section 3 | 21d | 2026-06-08 A | 2026-07-07 A | SDR-2-CON-ST-ZA-6360, SDR-2-PRO-DES-C-1070, SDR-2-PRO-DEL-M-1020 SS | 100% |  |
|  | 7 | **bedding Works** |  | 2026-06-27 | 2026-07-09 |  |  |  |
| SDR-2-CON-ST-ZA-3450 |  | Sand bedding for GRP Pipes | 21d | 2026-06-27 A | 2026-07-09 A | SDR-2-CON-ST-ZA-1000 FS+4d | 100% |  |
|  | 2 | **Pipes Laying** |  | 2026-08-20 | 2026-12-22 |  |  |  |
| SDR-2-CON-ST-ZA-1090 |  | Install ST GRP Pipes | 21d | 2026-08-20 A | 2026-12-22 | SDR-2-PRO-DES-C-1020 FF, SDR-2-CON-ST-ZA-3450 | 40% | 8.1d |
|  | 6 | **Testing** |  | 2026-12-22 | 2027-01-16 |  |  |  |
| SDR-2-CON-ST-ZA-3440 |  | Testing ST GRP Pipes | 21d | 2026-12-22 | 2027-01-16 | SDR-2-PRO-DEL-E-1200, SDR-2-CON-ST-ZA-1090 |  | 8.1d |
|  | 3 | **Backfilling** |  | 2026-12-24 | 2027-01-18 |  |  |  |
| SDR-2-CON-ST-ZA-1140 |  | Backfilling ST GRP Pipes | 21d | 2026-12-24 | 2027-01-18 | SDR-2-CON-ST-ZA-3440 SS+2d |  | 8.1d |
|  | 4 | **Manholes** |  | 2026-06-08 | 2027-01-18 |  |  |  |
|  | 1 | **Excavation** |  | 2026-06-08 | 2026-11-24 |  |  |  |
| SDR-2-CON-ST-ZA-6910 |  | Excavation Manholes Section 1 | 21d | 2026-06-08 A | 2026-08-31 A | SDR-2-CON-ST-ZA-6900 SS, SDR-2-PRO-DEL-M-1030 SS, SDR-2-PRO-ST-M-1050 SS | 100% |  |
| SDR-2-CON-ST-ZA-6370 |  | Excavation Manholes Section 2 | 21d | 2026-06-15 A | 2026-06-22 A | SDR-2-CON-ST-ZA-6910 | 100% |  |
| SDR-2-CON-ST-ZA-1210 |  | Excavation Manholes Section 3 | 21d | 2026-06-22 A | 2026-11-24 | SDR-2-CON-ST-ZA-6370, SDR-2-PRO-DEL-E-1090 FF | 90% | 8d |
|  | 2 | **bedding Works** |  | 2026-08-20 | 2026-11-24 |  |  |  |
| SDR-2-CON-ST-ZA-3520 |  | Sand bedding for Manholes | 21d | 2026-08-20 A | 2026-11-24 | SDR-2-PRO-DEL-E-1050, SDR-2-CON-ST-ZA-1210 FF, SDR-2-PRO-DES-C-1060 FF | 25% | 8d |
|  | 3 | **Install Manholes** |  | 2026-08-20 | 2026-11-24 |  |  |  |
| SDR-2-CON-ST-ZA-3600 |  | Manholes Installation | 21d | 2026-08-20 A | 2026-11-24 | SDR-2-CON-ST-ZA-3520 FF, SDR-2-PRO-DEL-M-1030 FF, SDR-2-PRO-DEL-M-1020 FF, SDR-2-PRO-ST-E-1070 FF, SDR-2-CON-RW-ZG-2600 FF | 28% | 8d |
|  | 4 | **Testing** |  | 2026-12-01 | 2026-12-24 |  |  |  |

| ID | WBS | Task | Duration | Start | Finish | Predecessors | Complete | Total float |
| --- | --- | --- | --- | --- | --- | --- | --- | --- |
| SDR-2-CON-ST-ZA-3680 |  | Testing for Manholes | 21d | 2026-12-01 | 2026-12-24 | SDR-2-CON-ST-ZA-3600 FS+5d |  | 8d |
|  | 5 | **Backfilling** |  | 2026-12-26 | 2027-01-18 |  |  |  |
| SDR-2-CON-ST-ZA-3760 |  | Backfilling for Manholes | 21d | 2026-12-26 | 2027-01-18 | SDR-2-CON-ST-ZA-3680 |  | 8d |
|  | 5 | **Catch basin** |  | 2026-08-16 | 2027-03-03 |  |  |  |
|  | 1 | **Excavation** |  | 2026-08-16 | 2026-10-29 |  |  |  |
| SDR-2-CON-ST-ZA-6930 |  | Excavation for Catch basin Section 1 | 21d | 2026-08-16 A | 2026-10-05 | SDR-2-CON-ST-ZA-6370, SDR-2-CON-ST-ZA-6910, SDR-2-PRO-ST-M-1040 FF | 40% | 106d |
| SDR-2-CON-ST-ZA-1300 |  | Excavation for Catch basin Section 2 | 21d | 2026-10-06 | 2026-10-29 | SDR-2-CON-ST-ZA-6930 |  | 106d |
|  | 2 | **bedding Works** |  | 2026-10-31 | 2026-11-23 |  |  |  |
| SDR-2-CON-ST-ZA-3840 |  | Sand Dedding for Catch basin | 21d | 2026-10-31 | 2026-11-23 | SDR-2-CON-ST-ZA-1300 |  | 106d |
|  | 3 | **Install Catch basin** |  | 2026-11-24 | 2026-12-17 |  |  |  |
| SDR-2-CON-ST-ZA-3900 |  | Install Catch basin | 21d | 2026-11-24 | 2026-12-17 | SDR-2-CON-RW-ZA-2740, SDR-2-CON-ST-ZA-3840 |  | 106d |
|  | 4 | **Testing** |  | 2026-11-24 | 2026-12-17 |  |  |  |
| SDR-2-CON-ST-ZA-3960 |  | Testing for Catch basin pipe | 21d | 2026-11-24 | 2026-12-17 | SDR-2-CON-ST-ZA-3900 SS, SDR-2-MILS-1100 |  | 106d |
|  | 5 | **Backfilling** |  | 2026-11-24 | 2027-03-03 |  |  |  |
| SDR-2-CON-ST-ZA-6940 |  | Backfilling for Catch basin Section 1 | 11d | 2026-11-24 | 2026-12-06 | SDR-2-CON-ST-ZA-3960 SS |  | 118d |
| SDR-2-CON-ST-ZA-4020 |  | Backfilling for Catch basin Section 2 | 10d | 2027-02-18 | 2027-03-03 | SDR-2-CON-ST-ZA-6940 SS, SDR-2-CON-RW-ZG-2210 SS |  | 52.1d |
|  | 12 | **STORM WATER LINE IN ( PH2-A-MCD0 )** |  | 2026-06-01 | 2027-04-28 |  |  |  |
|  | 8 | **Pipes Works** |  | 2026-06-08 | 2026-11-23 |  |  |  |
|  | 1 | **Excavation** |  | 2026-06-08 | 2026-07-14 |  |  |  |
| SDR-2-CON-ST-ZA-6950 |  | Excavation for GRP Pipes Section 1 | 21d | 2026-06-08 A | 2026-06-15 A | SDR-2-CON-ST-ZA-6900 SS+3d | 100% |  |
| SDR-2-CON-ST-ZA-6390 |  | Excavation for GRP Pipes Section 2 | 21d | 2026-06-15 A | 2026-06-22 A | SDR-2-CON-ST-ZA-6950 | 100% |  |
| SDR-2-CON-ST-ZA-4030 |  | Excavation for GRP Pipes Section 3 | 21d | 2026-06-22 A | 2026-07-14 A | SDR-2-CON-ST-ZA-6390 | 100% |  |
|  | 7 | **bedding Works** |  | 2026-08-20 | 2026-10-05 |  |  |  |
| SDR-2-CON-ST-ZA-4090 |  | Sand bedding for GRP Pipes | 21d | 2026-08-20 A | 2026-10-05 | SDR-2-CON-ST-ZA-4030 FF, SDR-2-CON-ST-ZA-4030 | 80% | 54d |
|  | 2 | **Pipes Laying** |  | 2026-08-26 | 2026-10-05 |  |  |  |
| SDR-2-CON-ST-ZA-4040 |  | Install ST GRP Pipes | 21d | 2026-08-26 A | 2026-10-05 | SDR-2-CON-ST-ZA-4090 FF | 80% | 54d |
|  | 6 | **Testing** |  | 2026-10-06 | 2026-10-29 |  |  |  |
| SDR-2-CON-ST-ZA-4080 |  | Testing ST GRP Pipes | 21d | 2026-10-06 | 2026-10-29 | SDR-2-CON-ST-ZA-4040 |  | 54d |
|  | 3 | **Backfilling** |  | 2026-10-31 | 2026-11-23 |  |  |  |
| SDR-2-CON-ST-ZA-4050 |  | Backfilling ST GRP Pipes | 21d | 2026-10-31 | 2026-11-23 | SDR-2-CON-RW-ZG-1210, SDR-2-CON-ST-ZA-4080 |  | 54d |
|  | 4 | **Manholes** |  | 2026-06-01 | 2026-11-24 |  |  |  |
|  | 1 | **Excavation** |  | 2026-06-01 | 2026-08-31 |  |  |  |
| SDR-2-CON-ST-ZA-6960 |  | Excavation Manholes Section 1 | 21d | 2026-06-01 A | 2026-08-31 A | SDR-2-CON-ST-ZA-6950 SS | 100% |  |
| SDR-2-CON-ST-ZA-6400 |  | Excavation Manholes Section 2 | 21d | 2026-06-08 A | 2026-06-15 A | SDR-2-CON-ST-ZA-6960 | 100% |  |
| SDR-2-CON-ST-ZA-4060 |  | Excavation Manholes Section 3 | 21d | 2026-07-13 A | 2026-07-20 A | SDR-2-CON-ST-ZA-6400 | 100% |  |
|  | 2 | **bedding Works** |  | 2026-08-27 | 2026-10-05 |  |  |  |
| SDR-2-CON-ST-ZA-4100 |  | Sand bedding for Manholes | 21d | 2026-08-27 A | 2026-10-05 | SDR-2-CON-ST-ZA-4060 | 25% | 87.91d |
|  | 3 | **Install Manholes** |  | 2026-08-30 | 2026-10-06 |  |  |  |
| SDR-2-CON-ST-ZA-4110 |  | Manholes Installation | 21d | 2026-08-30 A | 2026-10-06 | SDR-2-CON-ST-ZA-4100 FF | 28% | 86d |
|  | 4 | **Testing** |  | 2026-10-07 | 2026-10-31 |  |  |  |
| SDR-2-CON-ST-ZA-4120 |  | Testing for Manholes | 21d | 2026-10-07 | 2026-10-31 | SDR-2-CON-ST-ZA-4110 |  | 86d |
|  | 5 | **Backfilling** |  | 2026-11-01 | 2026-11-24 |  |  |  |
| SDR-2-CON-ST-ZA-4130 |  | Backfilling for Manholes | 21d | 2026-11-01 | 2026-11-24 | SDR-2-CON-ST-ZA-4120 |  | 86d |
|  | 5 | **Catch basin** |  | 2026-08-16 | 2027-04-28 |  |  |  |
|  | 1 | **Excavation** |  | 2026-08-16 | 2026-11-22 |  |  |  |
| SDR-2-CON-ST-ZA-6970 |  | Excavation for Catch basin Section 1 | 21d | 2026-08-16 A | 2026-10-06 | SDR-2-CON-ST-ZA-4110 FF | 50% | 121d |
| SDR-2-CON-ST-ZA-6410 |  | Excavation for Catch basin Section 2 | 21d | 2026-10-07 | 2026-10-31 | SDR-2-CON-ST-ZA-6970 |  | 121d |
| SDR-2-CON-ST-ZA-4070 |  | Excavation for Catch basin Section 3 | 19d | 2026-11-01 | 2026-11-22 | SDR-2-CON-ST-ZA-6410 |  | 121d |
|  | 2 | **bedding Works** |  | 2026-12-22 | 2027-01-14 |  |  |  |
| SDR-2-CON-ST-ZA-4140 |  | Sand Dedding for Catch basin | 21d | 2026-12-22 | 2027-01-14 | SDR-2-CON-CC-ZG-1620, SDR-2-CON-ST-ZA-4070 |  | 96d |
|  | 3 | **Install Catch basin** |  | 2027-01-16 | 2027-02-08 |  |  |  |
| SDR-2-CON-ST-ZA-4150 |  | Install Catch basin | 21d | 2027-01-16 | 2027-02-08 | SDR-2-CON-ST-ZA-4140, SDR-2-CON-ST-ZA-4050 |  | 96d |
|  | 4 | **Testing** |  | 2027-04-06 | 2027-04-17 |  |  |  |
| SDR-2-CON-ST-ZA-4160 |  | Testing for Catch basin pipe | 10d | 2027-04-06 | 2027-04-17 | SDR-2-CON-RW-ZG-1310, SDR-2-CON-ST-ZA-4150 |  | 53d |
|  | 5 | **Backfilling** |  | 2027-04-18 | 2027-04-28 |  |  |  |
| SDR-2-CON-ST-ZA-4170 |  | Backfilling for Catch basin | 10d | 2027-04-18 | 2027-04-28 | SDR-2-CON-ST-ZA-4160 |  | 53d |
|  | 13 | **STORM WATER LINE IN ( PH2-A-MCE0 )** |  | 2026-07-01 | 2027-03-15 |  |  |  |
|  | 8 | **Pipes Works** |  | 2026-07-01 | 2026-11-23 |  |  |  |
|  | 1 | **Excavation** |  | 2026-07-01 | 2026-07-20 |  |  |  |
| SDR-2-CON-ST-ZA-6980 |  | Excavation for GRP Pipes Section 1 | 21d | 2026-07-01 A | 2026-07-09 A | SDR-2-CON-ST-ZA-6950 SS+5d, SDR-2-PRO-DEL-E-1040, SDR-2-PRO-DEL-E-1000 | 100% |  |
| SDR-2-CON-ST-ZA-6420 |  | Excavation for GRP Pipes Section 2 | 21d | 2026-07-09 A | 2026-07-12 A | SDR-2-CON-ST-ZA-6980, SDR-2-PRO-DES-C-1070 | 100% |  |
| SDR-2-CON-ST-ZA-4180 |  | Excavation for GRP Pipes Section 3 | 21d | 2026-07-13 A | 2026-07-20 A | SDR-2-CON-ST-ZA-6420 FS+4d | 100% |  |
|  | 7 | **bedding Works** |  | 2026-08-20 | 2026-10-05 |  |  |  |
| SDR-2-CON-ST-ZA-4240 |  | Sand bedding for GRP Pipes | 21d | 2026-08-20 A | 2026-10-05 | SDR-2-CON-ST-ZA-4180 | 50% | 71d |
|  | 2 | **Pipes Laying** |  | 2026-08-27 | 2026-10-05 |  |  |  |
| SDR-2-CON-ST-ZA-4190 |  | Install ST GRP Pipes | 21d | 2026-08-27 A | 2026-10-05 | SDR-2-CON-ST-ZA-4240 FF, SDR-2-PRO-ST-M-1020 FF | 70% | 71d |
|  | 6 | **Testing** |  | 2026-10-06 | 2026-10-29 |  |  |  |
| SDR-2-CON-ST-ZA-4230 |  | Testing ST GRP Pipes | 21d | 2026-10-06 | 2026-10-29 | SDR-2-CON-ST-ZA-4190 |  | 71d |
|  | 3 | **Backfilling** |  | 2026-10-31 | 2026-11-23 |  |  |  |
| SDR-2-CON-ST-ZA-4200 |  | Backfilling ST GRP Pipes | 21d | 2026-10-31 | 2026-11-23 | SDR-2-CON-ST-ZA-4230 |  | 71d |

| ID | WBS | Task | Duration | Start | Finish | Predecessors | Complete | Total float |
| --- | --- | --- | --- | --- | --- | --- | --- | --- |
|  | 4 | **Manholes** |  | 2026-07-01 | 2026-11-23 |  |  |  |
|  | 1 | **Excavation** |  | 2026-07-01 | 2026-08-31 |  |  |  |
| SDR-2-CON-ST-ZA-6990 |  | Excavation Manholes Section 1 | 21d | 2026-07-01 A | 2026-08-31 A | SDR-2-CON-ST-ZA-6980 SS | 100% |  |
| SDR-2-CON-ST-ZA-6430 |  | Excavation Manholes Section 2 | 21d | 2026-07-13 A | 2026-07-20 A | SDR-2-CON-ST-ZA-6990 | 100% |  |
| SDR-2-CON-ST-ZA-4210 |  | Excavation Manholes Section 3 | 21d | 2026-07-20 A | 2026-08-01 A | SDR-2-CON-ST-ZA-6430 FS+3d | 100% |  |
|  | 2 | **bedding Works** |  | 2026-08-20 | 2026-10-05 |  |  |  |
| SDR-2-CON-ST-ZA-4250 |  | Sand bedding for Manholes | 21d | 2026-08-20 A | 2026-10-05 | SDR-2-CON-ST-ZA-4210 | 25% | 73d |
|  | 3 | **Install Manholes** |  | 2026-08-27 | 2026-10-05 |  |  |  |
| SDR-2-CON-ST-ZA-4260 |  | Manholes Installation | 21d | 2026-08-27 A | 2026-10-05 | SDR-2-CON-ST-ZA-4250 FF | 28% | 73d |
|  | 4 | **Testing** |  | 2026-10-06 | 2026-10-29 |  |  |  |
| SDR-2-CON-ST-ZA-4270 |  | Testing for Manholes | 21d | 2026-10-06 | 2026-10-29 | SDR-2-CON-ST-ZA-4260 |  | 73d |
|  | 5 | **Backfilling** |  | 2026-10-31 | 2026-11-23 |  |  |  |
| SDR-2-CON-ST-ZA-4280 |  | Backfilling for Manholes | 21d | 2026-10-31 | 2026-11-23 | SDR-2-CON-ST-ZA-4270 |  | 73d |
|  | 5 | **Catch basin** |  | 2026-08-16 | 2027-03-15 |  |  |  |
|  | 1 | **Excavation** |  | 2026-08-16 | 2026-11-07 |  |  |  |
| SDR-2-CON-ST-ZA-6440 |  | Excavation for Catch basin Section 1 | 21d | 2026-08-16 A | 2026-10-05 | SDR-2-CON-ST-ZA-4260 FF | 50% | 84d |
| SDR-2-CON-ST-ZA-4220 |  | Excavation for Catch basin Section 2 | 21d | 2026-10-14 | 2026-11-07 | SDR-2-CON-ST-ZA-6440 FS+7d |  | 84d |
|  | 2 | **bedding Works** |  | 2026-12-22 | 2027-01-14 |  |  |  |
| SDR-2-CON-ST-ZA-4290 |  | Sand Dedding for Catch basin | 21d | 2026-12-22 | 2027-01-14 | SDR-2-CON-CC-ZG-1620, SDR-2-CON-ST-ZA-4220 |  | 46d |
|  | 3 | **Install Catch basin** |  | 2027-01-16 | 2027-02-08 |  |  |  |
| SDR-2-CON-ST-ZA-4300 |  | Install Catch basin | 21d | 2027-01-16 | 2027-02-08 | SDR-2-CON-ST-ZA-4290 |  | 46d |
|  | 4 | **Testing** |  | 2027-02-15 | 2027-02-27 |  |  |  |
| SDR-2-CON-ST-ZA-4310 |  | Testing for Catch basin pipe | 10d | 2027-02-15 | 2027-02-27 | SDR-2-CON-ST-ZA-4300 FS+5d |  | 46d |
|  | 5 | **Backfilling** |  | 2027-02-28 | 2027-03-15 |  |  |  |
| SDR-2-CON-ST-ZA-4320 |  | Backfilling for Catch basin | 10d | 2027-02-28 | 2027-03-15 | SDR-2-CON-ST-ZA-3960, SDR-2-CON-ST-ZA-4310, SDR-2-CON-ST-ZA-4280, SDR-2-CON-ST-ZA-4130, SDR-2-CON-ST-ZA-3760 |  | 46d |
|  | 14 | **STORM WATER LINE IN ( PH2-A-MCF0 )** |  | 2026-06-22 | 2027-04-11 |  |  |  |
|  | 8 | **Pipes Works** |  | 2026-06-22 | 2026-12-16 |  |  |  |
|  | 1 | **Excavation** |  | 2026-06-22 | 2026-07-13 |  |  |  |
| SDR-2-CON-ST-ZA-7000 |  | Excavation for GRP Pipes Section 1 | 21d | 2026-06-22 A | 2026-06-30 A | SDR-2-CON-ST-ZA-6980 SS+4d, SDR-2-PRO-DEL-E-1050, SDR-2-PRO-DEL-E-1130 SS | 100% |  |
| SDR-2-CON-ST-ZA-6450 |  | Excavation for GRP Pipes Section 2 | 21d | 2026-06-30 A | 2026-07-06 A | SDR-2-CON-ST-ZA-7000 | 100% |  |
| SDR-2-CON-ST-ZA-4330 |  | Excavation for GRP Pipes Section 3 | 21d | 2026-07-06 A | 2026-07-13 A | SDR-2-CON-ST-ZA-6450 | 100% |  |
|  | 7 | **bedding Works** |  | 2026-10-05 | 2026-10-28 |  |  |  |
| SDR-2-CON-ST-ZA-4390 |  | Sand bedding for GRP Pipes | 21d | 2026-10-05 | 2026-10-28 | SDR-2-CON-ST-ZA-4330 |  | 51d |
|  | 2 | **Pipes Laying** |  | 2026-09-10 | 2026-10-28 |  |  |  |
| SDR-2-CON-ST-ZA-4340 |  | Install ST GRP Pipes | 21d | 2026-09-10 A | 2026-10-28 | SDR-2-CON-ST-ZA-4390 FF | 50% | 51d |
|  | 6 | **Testing** |  | 2026-10-29 | 2026-11-22 |  |  |  |
| SDR-2-CON-ST-ZA-4380 |  | Testing ST GRP Pipes | 21d | 2026-10-29 | 2026-11-22 | SDR-2-CON-ST-ZA-4340 |  | 51d |
|  | 3 | **Backfilling** |  | 2026-11-23 | 2026-12-16 |  |  |  |
| SDR-2-CON-ST-ZA-4350 |  | Backfilling ST GRP Pipes | 21d | 2026-11-23 | 2026-12-16 | SDR-2-CON-ST-ZA-4380 |  | 51d |
|  | 4 | **Manholes** |  | 2026-06-30 | 2027-01-11 |  |  |  |
|  | 1 | **Excavation** |  | 2026-06-30 | 2026-10-05 |  |  |  |
| SDR-2-CON-ST-ZA-6460 |  | Excavation Manholes Section 1 | 21d | 2026-06-30 A | 2026-08-31 A | SDR-2-CON-ST-ZA-7000 SS | 100% |  |
| SDR-2-CON-ST-ZA-4360 |  | Excavation Manholes Section 2 | 21d | 2026-07-06 A | 2026-10-05 | SDR-2-CON-ST-ZA-6460 | 50% | 14d |
|  | 2 | **bedding Works** |  | 2026-10-06 | 2026-10-29 |  |  |  |
| SDR-2-CON-ST-ZA-4400 |  | Sand bedding for Manholes | 21d | 2026-10-06 | 2026-10-29 | SDR-2-CON-ST-ZA-4360 |  | 14d |
|  | 3 | **Install Manholes** |  | 2026-10-31 | 2026-11-23 |  |  |  |
| SDR-2-CON-ST-ZA-4410 |  | Manholes Installation | 21d | 2026-10-31 | 2026-11-23 | SDR-2-CON-ST-ZA-4400 |  | 14d |
|  | 4 | **Testing** |  | 2026-11-24 | 2026-12-17 |  |  |  |
| SDR-2-CON-ST-ZA-4420 |  | Testing for Manholes | 21d | 2026-11-24 | 2026-12-17 | SDR-2-CON-ST-ZA-4410 |  | 14d |
|  | 5 | **Backfilling** |  | 2026-12-19 | 2027-01-11 |  |  |  |
| SDR-2-CON-ST-ZA-4430 |  | Backfilling for Manholes | 21d | 2026-12-19 | 2027-01-11 | SDR-2-CON-ST-ZA-4420 |  | 14d |
|  | 5 | **Catch basin** |  | 2026-08-16 | 2027-04-11 |  |  |  |
|  | 1 | **Excavation** |  | 2026-08-16 | 2026-12-17 |  |  |  |
| SDR-2-CON-ST-ZA-6470 |  | Excavation for Catch basin Section 1 | 21d | 2026-08-16 A | 2026-11-23 | SDR-2-CON-ST-ZA-4410 FF | 40% | 23d |
| SDR-2-CON-ST-ZA-4370 |  | Excavation for Catch basin Section 2 | 21d | 2026-11-24 | 2026-12-17 | SDR-2-CON-ST-ZA-6470 |  | 23d |
|  | 2 | **bedding Works** |  | 2026-12-19 | 2027-01-11 |  |  |  |
| SDR-2-CON-ST-ZA-4440 |  | Sand Dedding for Catch basin | 21d | 2026-12-19 | 2027-01-11 | SDR-2-CON-RW-ZG-2110, SDR-2-CON-ST-ZA-4370 |  | 23d |
|  | 3 | **Install Catch basin** |  | 2027-01-12 | 2027-02-04 |  |  |  |
| SDR-2-CON-ST-ZA-4450 |  | Install Catch basin | 21d | 2027-01-12 | 2027-02-04 | SDR-2-CON-ST-ZA-4440 |  | 23d |
|  | 4 | **Testing** |  | 2027-02-06 | 2027-03-02 |  |  |  |
| SDR-2-CON-ST-ZA-4460 |  | Testing for Catch basin pipe | 21d | 2027-02-06 | 2027-03-02 | SDR-2-CON-ST-ZA-4450 |  | 23d |
|  | 5 | **Backfilling** |  | 2027-03-03 | 2027-04-11 |  |  |  |
| SDR-2-CON-ST-ZA-7010 |  | Backfilling for Catch basin Section 1 | 15d | 2027-03-03 | 2027-03-24 | SDR-2-CON-ST-ZA-4460 |  | 23d |
| SDR-2-CON-ST-ZA-4470 |  | Backfilling for Catch basin Section 2 | 15d | 2027-03-25 | 2027-04-11 | SDR-2-CON-ST-ZA-7010, SDR-2-CON-RW-ZG-2210 |  | 23d |
|  | 15 | **STORM WATER LINE IN ( PH2-A-MCG0 )** |  | 2026-07-01 | 2027-04-06 |  |  |  |
|  | 8 | **Pipes Works** |  | 2026-07-01 | 2027-01-10 |  |  |  |
|  | 1 | **Excavation** |  | 2026-07-01 | 2026-07-20 |  |  |  |
| SDR-2-CON-ST-ZA-6480 |  | Excavation for GRP Pipes Section 1 | 21d | 2026-07-01 A | 2026-07-11 A | SDR-2-CON-ST-ZA-7000 SS+4d, SDR-2-PRO-DES-E-1020 SS | 100% |  |
| SDR-2-CON-ST-ZA-4480 |  | Excavation for GRP Pipes Section 2 | 21d | 2026-07-12 A | 2026-07-20 A | SDR-2-CON-ST-ZA-6480 | 100% |  |
|  | 7 | **bedding Works** |  | 2026-10-05 | 2026-10-28 |  |  |  |

| ID | WBS | Task | Duration | Start | Finish | Predecessors | Complete | Total float |
| --- | --- | --- | --- | --- | --- | --- | --- | --- |
| SDR-2-CON-ST-ZA-4540 |  | Sand bedding for GRP Pipes | 21d | 2026-10-05 | 2026-10-28 | SDR-2-CON-ST-ZA-4480 |  | 37d |
|  | 2 | **Pipes Laying** |  | 2026-10-29 | 2026-11-22 |  |  |  |
| SDR-2-CON-ST-ZA-4490 |  | Install ST GRP Pipes | 21d | 2026-10-29 | 2026-11-22 | SDR-2-CON-ST-ZA-4540 |  | 37d |
|  | 6 | **Testing** |  | 2026-11-23 | 2026-12-16 |  |  |  |
| SDR-2-CON-ST-ZA-4530 |  | Testing ST GRP Pipes | 21d | 2026-11-23 | 2026-12-16 | SDR-2-CON-ST-ZA-4490 |  | 37d |
|  | 3 | **Backfilling** |  | 2026-12-17 | 2027-01-10 |  |  |  |
| SDR-2-CON-ST-ZA-4500 |  | Backfilling ST GRP Pipes | 21d | 2026-12-17 | 2027-01-10 | SDR-2-CON-ST-ZA-4530 |  | 37d |
|  | 4 | **Manholes** |  | 2026-07-20 | 2027-01-11 |  |  |  |
|  | 1 | **Excavation** |  | 2026-07-20 | 2026-10-05 |  |  |  |
| SDR-2-CON-ST-ZA-6490 |  | Excavation Manholes Section 1 | 21d | 2026-07-20 A | 2026-08-31 A | SDR-2-CON-ST-ZA-6480 SS | 100% |  |
| SDR-2-CON-ST-ZA-4510 |  | Excavation Manholes Section 2 | 21d | 2026-07-29 A | 2026-10-05 | SDR-2-CON-ST-ZA-6490 FS+3d | 50% | 14d |
|  | 2 | **bedding Works** |  | 2026-10-06 | 2026-10-29 |  |  |  |
| SDR-2-CON-ST-ZA-4550 |  | Sand bedding for Manholes | 21d | 2026-10-06 | 2026-10-29 | SDR-2-CON-ST-ZA-4510 |  | 14d |
|  | 3 | **Install Manholes** |  | 2026-10-31 | 2026-11-23 |  |  |  |
| SDR-2-CON-ST-ZA-4560 |  | Manholes Installation | 21d | 2026-10-31 | 2026-11-23 | SDR-2-CON-ST-ZA-4550 |  | 14d |
|  | 4 | **Testing** |  | 2026-11-24 | 2026-12-17 |  |  |  |
| SDR-2-CON-ST-ZA-4570 |  | Testing for Manholes | 21d | 2026-11-24 | 2026-12-17 | SDR-2-CON-ST-ZA-4560 |  | 14d |
|  | 5 | **Backfilling** |  | 2026-12-19 | 2027-01-11 |  |  |  |
| SDR-2-CON-ST-ZA-4580 |  | Backfilling for Manholes | 21d | 2026-12-19 | 2027-01-11 | SDR-2-CON-RW-ZG-2110, SDR-2-CON-ST-ZA-4570 |  | 14d |
|  | 5 | **Catch basin** |  | 2026-08-16 | 2027-04-06 |  |  |  |
|  | 1 | **Excavation** |  | 2026-08-16 | 2026-12-23 |  |  |  |
| SDR-2-CON-ST-ZA-6500 |  | Excavation for Catch basin Section 1 | 21d | 2026-08-16 A | 2026-11-23 | SDR-2-CON-ST-ZA-4560 FF | 40% | 30d |
| SDR-2-CON-ST-ZA-4520 |  | Excavation for Catch basin Section 2 | 21d | 2026-11-30 | 2026-12-23 | SDR-2-CON-ST-ZA-6500 FS+5d |  | 30d |
|  | 2 | **bedding Works** |  | 2026-12-24 | 2027-01-17 |  |  |  |
| SDR-2-CON-ST-ZA-4590 |  | Sand Dedding for Catch basin | 21d | 2026-12-24 | 2027-01-17 | SDR-2-MILS-1100, SDR-2-CON-ST-ZA-4520 |  | 30d |
|  | 3 | **Install Catch basin** |  | 2027-01-18 | 2027-02-10 |  |  |  |
| SDR-2-CON-ST-ZA-4600 |  | Install Catch basin | 21d | 2027-01-18 | 2027-02-10 | SDR-2-CON-ST-ZA-4590 |  | 30d |
|  | 4 | **Testing** |  | 2027-02-11 | 2027-02-23 |  |  |  |
| SDR-2-CON-ST-ZA-4610 |  | Testing for Catch basin pipe | 10d | 2027-02-11 | 2027-02-23 | SDR-2-CON-ST-ZA-4600 |  | 30d |
|  | 5 | **Backfilling** |  | 2027-02-24 | 2027-04-06 |  |  |  |
| SDR-2-CON-ST-ZA-7020 |  | Backfilling for Catch basin Section 1 | 14d | 2027-02-24 | 2027-03-16 | SDR-2-CON-ST-ZA-4610 |  | 30d |
| SDR-2-CON-ST-ZA-4620 |  | Backfilling for Catch basin Section 2 | 15d | 2027-03-21 | 2027-04-06 | SDR-2-CON-ST-ZA-7020, SDR-2-CON-RW-ZG-2060 |  | 27d |
|  | 16 | **STORM WATER LINE IN ( PH2-A-MCH0 )** |  | 2026-07-01 | 2027-04-04 |  |  |  |
|  | 8 | **Pipes Works** |  | 2026-07-01 | 2027-01-10 |  |  |  |
|  | 1 | **Excavation** |  | 2026-07-01 | 2026-07-20 |  |  |  |
| SDR-2-CON-ST-ZA-6510 |  | Excavation for GRP Pipes Section 1 | 21d | 2026-07-01 A | 2026-07-11 A | SDR-2-CON-ST-ZA-6480 SS | 100% |  |
| SDR-2-CON-ST-ZA-4630 |  | Excavation for GRP Pipes Section 2 | 21d | 2026-07-12 A | 2026-07-20 A | SDR-2-CON-ST-ZA-6510 | 100% |  |
|  | 7 | **bedding Works** |  | 2026-10-05 | 2026-10-28 |  |  |  |
| SDR-2-CON-ST-ZA-4690 |  | Sand bedding for GRP Pipes | 21d | 2026-10-05 | 2026-10-28 | SDR-2-CON-ST-ZA-4630 |  | 17d |
|  | 2 | **Pipes Laying** |  | 2026-10-29 | 2026-11-22 |  |  |  |
| SDR-2-CON-ST-ZA-4640 |  | Install ST GRP Pipes | 21d | 2026-10-29 | 2026-11-22 | SDR-2-CON-ST-ZA-4690 |  | 17d |
|  | 6 | **Testing** |  | 2026-11-23 | 2026-12-16 |  |  |  |
| SDR-2-CON-ST-ZA-4680 |  | Testing ST GRP Pipes | 21d | 2026-11-23 | 2026-12-16 | SDR-2-CON-ST-ZA-4640 |  | 17d |
|  | 3 | **Backfilling** |  | 2026-12-17 | 2027-01-10 |  |  |  |
| SDR-2-CON-ST-ZA-4650 |  | Backfilling ST GRP Pipes | 21d | 2026-12-17 | 2027-01-10 | SDR-2-CON-RW-ZG-2500, SDR-2-CON-ST-ZA-4680 |  | 17d |
|  | 4 | **Manholes** |  | 2026-07-01 | 2027-01-11 |  |  |  |
|  | 1 | **Excavation** |  | 2026-07-01 | 2026-10-05 |  |  |  |
| SDR-2-CON-ST-ZA-6520 |  | Excavation Manholes Section 1 | 21d | 2026-07-01 A | 2026-08-31 A | SDR-2-CON-ST-ZA-6510 SS | 100% |  |
| SDR-2-CON-ST-ZA-6350 |  | Excavation Manholes Section 2 | 21d | 2026-07-13 A | 2026-10-05 | SDR-2-CON-ST-ZA-6520 FS+3d | 50% | 19d |
|  | 2 | **bedding Works** |  | 2026-10-06 | 2026-10-29 |  |  |  |
| SDR-2-CON-ST-ZA-4700 |  | Sand bedding for Manholes | 21d | 2026-10-06 | 2026-10-29 | SDR-2-CON-ST-ZA-6350 |  | 19d |
|  | 3 | **Install Manholes** |  | 2026-10-31 | 2026-11-23 |  |  |  |
| SDR-2-CON-ST-ZA-4710 |  | Manholes Installation | 21d | 2026-10-31 | 2026-11-23 | SDR-2-CON-ST-ZA-4700 |  | 19d |
|  | 4 | **Testing** |  | 2026-11-24 | 2026-12-17 |  |  |  |
| SDR-2-CON-ST-ZA-4720 |  | Testing for Manholes | 21d | 2026-11-24 | 2026-12-17 | SDR-2-CON-ST-ZA-4710 |  | 19d |
|  | 5 | **Backfilling** |  | 2026-12-19 | 2027-01-11 |  |  |  |
| SDR-2-CON-ST-ZA-4730 |  | Backfilling for Manholes | 21d | 2026-12-19 | 2027-01-11 | SDR-2-CON-ST-ZA-4720 |  | 19d |
|  | 5 | **Catch basin** |  | 2026-08-16 | 2027-04-04 |  |  |  |
|  | 1 | **Excavation** |  | 2026-08-16 | 2026-12-17 |  |  |  |
| SDR-2-CON-ST-ZA-6530 |  | Excavation for Catch basin Section 1 | 21d | 2026-08-16 A | 2026-11-23 | SDR-2-CON-ST-ZA-4710 FF | 40% | 30d |
| SDR-2-CON-ST-ZA-4670 |  | Excavation for Catch basin Section 2 | 21d | 2026-11-24 | 2026-12-17 | SDR-2-CON-ST-ZA-6530 |  | 30d |
|  | 2 | **bedding Works** |  | 2026-12-19 | 2027-01-11 |  |  |  |
| SDR-2-CON-ST-ZA-4740 |  | Sand Dedding for Catch basin | 21d | 2026-12-19 | 2027-01-11 | SDR-2-CON-ST-ZA-4670 |  | 30d |
|  | 3 | **Install Catch basin** |  | 2027-01-18 | 2027-02-10 |  |  |  |
| SDR-2-CON-ST-ZA-4750 |  | Install Catch basin | 21d | 2027-01-18 | 2027-02-10 | SDR-2-CON-ST-ZA-4740 FS+5d |  | 30d |
|  | 4 | **Testing** |  | 2027-02-11 | 2027-02-23 |  |  |  |
| SDR-2-CON-ST-ZA-4760 |  | Testing for Catch basin pipe | 10d | 2027-02-11 | 2027-02-23 | SDR-2-CON-ST-ZA-4750 |  | 30d |
|  | 5 | **Backfilling** |  | 2027-02-24 | 2027-04-04 |  |  |  |
| SDR-2-CON-ST-ZA-7030 |  | Backfilling for Catch basin Section 1 | 14d | 2027-02-24 | 2027-03-16 | SDR-2-CON-ST-ZA-4760 |  | 30d |
| SDR-2-CON-ST-ZA-4770 |  | Backfilling for Catch basin Section 2 | 15d | 2027-03-18 | 2027-04-04 | SDR-2-CON-ST-ZA-7030, SDR-2-CON-RW-ZG-1910 |  | 29d |

| ID | WBS | Task | Duration | Start | Finish | Predecessors | Complete | Total float |
| --- | --- | --- | --- | --- | --- | --- | --- | --- |
|  | 1 | **STORM WATER LINE IN ( PH2-A-MCA0 )** |  | 2026-06-15 | 2027-04-05 |  |  |  |
|  | 8 | **Pipes Works** |  | 2026-06-22 | 2027-01-09 |  |  |  |
|  | 1 | **Excavation** |  | 2026-06-22 | 2026-07-20 |  |  |  |
| SDR-2-CON-ST-ZA-6540 |  | Excavation for GRP Pipes Section 1 | 21d | 2026-06-22 A | 2026-06-29 A | SDR-2-CON-ST-ZA-6360 SS | 100% |  |
| SDR-2-CON-ST-ZA-4780 |  | Excavation for GRP Pipes Section 2 | 21d | 2026-07-01 A | 2026-07-20 A | SDR-2-CON-ST-ZA-6540 | 100% |  |
|  | 7 | **bedding Works** |  | 2026-10-01 | 2026-10-28 |  |  |  |
| SDR-2-CON-ST-ZA-4840 |  | Sand bedding for GRP Pipes | 21d | 2026-10-01 A | 2026-10-28 | SDR-2-CON-ST-ZA-4780 | 25% | 21d |
|  | 2 | **Pipes Laying** |  | 2026-10-19 | 2026-11-11 |  |  |  |
| SDR-2-CON-ST-ZA-4790 |  | Install ST GRP Pipes | 21d | 2026-10-19 A | 2026-11-11 | SDR-2-CON-ST-ZA-4840 SS+15d |  | 21d |
|  | 6 | **Testing** |  | 2026-11-12 | 2026-12-06 |  |  |  |
| SDR-2-CON-ST-ZA-4830 |  | Testing ST GRP Pipes | 21d | 2026-11-12 | 2026-12-06 | SDR-2-CON-ST-ZA-4790 |  | 21d |
|  | 3 | **Backfilling** |  | 2026-12-16 | 2027-01-09 |  |  |  |
| SDR-2-CON-ST-ZA-4800 |  | Backfilling ST GRP Pipes | 21d | 2026-12-16 | 2027-01-09 | SDR-2-CON-ST-ZA-4830 FS+8d |  | 21d |
|  | 4 | **Manholes** |  | 2026-06-15 | 2027-01-11 |  |  |  |
|  | 1 | **Excavation** |  | 2026-06-15 | 2026-10-05 |  |  |  |
| SDR-2-CON-ST-ZA-6550 |  | Excavation Manholes Section 1 | 21d | 2026-06-15 A | 2026-08-31 A | SDR-2-CON-ST-ZA-6540 SS | 100% |  |
| SDR-2-CON-ST-ZA-4810 |  | Excavation Manholes Section 2 | 21d | 2026-07-14 A | 2026-10-05 | SDR-2-CON-ST-ZA-6550 | 50% | 14d |
|  | 2 | **bedding Works** |  | 2026-10-06 | 2026-10-29 |  |  |  |
| SDR-2-CON-ST-ZA-4850 |  | Sand bedding for Manholes | 21d | 2026-10-06 | 2026-10-29 | SDR-2-CON-ST-ZA-4810 |  | 14d |
|  | 3 | **Install Manholes** |  | 2026-10-31 | 2026-11-23 |  |  |  |
| SDR-2-CON-ST-ZA-4860 |  | Manholes Installation | 21d | 2026-10-31 | 2026-11-23 | SDR-2-CON-ST-ZA-4850 |  | 14d |
|  | 4 | **Testing** |  | 2026-11-24 | 2026-12-17 |  |  |  |
| SDR-2-CON-ST-ZA-4870 |  | Testing for Manholes | 21d | 2026-11-24 | 2026-12-17 | SDR-2-CON-ST-ZA-4860 |  | 14d |
|  | 5 | **Backfilling** |  | 2026-12-19 | 2027-01-11 |  |  |  |
| SDR-2-CON-ST-ZA-4880 |  | Backfilling for Manholes | 21d | 2026-12-19 | 2027-01-11 | SDR-2-CON-ST-ZA-4870 |  | 14d |
|  | 5 | **Catch basin** |  | 2026-08-16 | 2027-04-05 |  |  |  |
|  | 1 | **Excavation** |  | 2026-08-16 | 2026-12-24 |  |  |  |
| SDR-2-CON-ST-ZA-6560 |  | Excavation for Catch basin Section 1 | 21d | 2026-08-16 A | 2026-11-23 | SDR-2-CON-ST-ZA-4860 FF |  | 24d |
| SDR-2-CON-ST-ZA-4820 |  | Excavation for Catch basin Section 2 | 21d | 2026-12-01 | 2026-12-24 | SDR-2-CON-ST-ZA-6560 FS+6d |  | 29.7d |
|  | 2 | **bedding Works** |  | 2026-12-26 | 2027-01-18 |  |  |  |
| SDR-2-CON-ST-ZA-4890 |  | Sand Dedding for Catch basin | 21d | 2026-12-26 | 2027-01-18 | SDR-2-CON-ST-ZA-4820 |  | 29.7d |
|  | 3 | **Install Catch basin** |  | 2027-01-19 | 2027-02-11 |  |  |  |
| SDR-2-CON-ST-ZA-4900 |  | Install Catch basin | 21d | 2027-01-19 | 2027-02-11 | SDR-2-CON-ST-ZA-4890 |  | 29.7d |
|  | 4 | **Testing** |  | 2027-02-13 | 2027-02-27 |  |  |  |
| SDR-2-CON-ST-ZA-4910 |  | Testing for Catch basin pipe | 12d | 2027-02-13 | 2027-02-27 | SDR-2-CON-ST-ZA-4900 |  | 29.7d |
|  | 5 | **Backfilling** |  | 2027-02-28 | 2027-04-05 |  |  |  |
| SDR-2-CON-ST-ZA-7040 |  | Backfilling for Catch basin Section 1 | 14d | 2027-02-28 | 2027-03-20 | SDR-2-CON-ST-ZA-4910 |  | 29.7d |
| SDR-2-CON-ST-ZA-4920 |  | Backfilling for Catch basin Section 2 | 14d | 2027-03-21 | 2027-04-05 | SDR-2-CON-ST-ZA-7040 |  | 29.7d |
|  | 17 | **STORM WATER LINE IN From MH - A2 / 2 TO STA-A2/10** |  | 2026-07-01 | 2027-04-27 |  |  |  |
|  | 8 | **Pipes Works** |  | 2026-07-01 | 2027-01-10 |  |  |  |
|  | 1 | **Excavation** |  | 2026-07-01 | 2026-08-05 |  |  |  |
| SDR-2-CON-ST-ZA-6570 |  | Excavation for GRP Pipes Section 1 | 21d | 2026-07-01 A | 2026-07-20 A | SDR-2-CON-ST-ZA-6540 SS+4d | 100% |  |
| SDR-2-CON-ST-ZA-4930 |  | Excavation for GRP Pipes Section 2 | 21d | 2026-07-21 A | 2026-08-05 A | SDR-2-CON-ST-ZA-6570 | 100% |  |
|  | 7 | **bedding Works** |  | 2026-10-05 | 2026-10-28 |  |  |  |
| SDR-2-CON-ST-ZA-4990 |  | Sand bedding for GRP Pipes | 21d | 2026-10-05 | 2026-10-28 | SDR-2-CON-ST-ZA-4930 |  | 20d |
|  | 2 | **Pipes Laying** |  | 2026-10-29 | 2026-11-22 |  |  |  |
| SDR-2-CON-ST-ZA-4940 |  | Install ST GRP Pipes | 21d | 2026-10-29 | 2026-11-22 | SDR-2-CON-ST-ZA-4990 |  | 20d |
|  | 6 | **Testing** |  | 2026-11-23 | 2026-12-16 |  |  |  |
| SDR-2-CON-ST-ZA-4980 |  | Testing ST GRP Pipes | 21d | 2026-11-23 | 2026-12-16 | SDR-2-CON-RW-ZG-2500, SDR-2-CON-ST-ZA-4940 |  | 20d |
|  | 3 | **Backfilling** |  | 2026-12-17 | 2027-01-10 |  |  |  |
| SDR-2-CON-ST-ZA-4950 |  | Backfilling ST GRP Pipes | 21d | 2026-12-17 | 2027-01-10 | SDR-2-CON-ST-ZA-4980 |  | 20d |
|  | 4 | **Manholes** |  | 2026-07-20 | 2027-01-11 |  |  |  |
|  | 1 | **Excavation** |  | 2026-07-20 | 2026-10-05 |  |  |  |
| SDR-2-CON-ST-ZA-6580 |  | Excavation Manholes Section 1 | 21d | 2026-07-20 A | 2026-07-30 A | SDR-2-CON-ST-ZA-6570 SS | 100% |  |
| SDR-2-CON-ST-ZA-4960 |  | Excavation Manholes Section 2 | 21d | 2026-07-30 A | 2026-10-05 | SDR-2-CON-ST-ZA-6580 | 50% | 0d |
|  | 2 | **bedding Works** |  | 2026-10-06 | 2026-10-29 |  |  |  |
| SDR-2-CON-ST-ZA-5000 |  | Sand bedding for Manholes | 21d | 2026-10-06 | 2026-10-29 | SDR-2-CON-ST-ZA-4960 |  | 0d |
|  | 3 | **Install Manholes** |  | 2026-10-31 | 2026-11-23 |  |  |  |
| SDR-2-CON-ST-ZA-5010 |  | Manholes Installation | 21d | 2026-10-31 | 2026-11-23 | SDR-2-CON-ST-ZA-5000 |  | 0d |
|  | 4 | **Testing** |  | 2026-11-24 | 2026-12-17 |  |  |  |
| SDR-2-CON-ST-ZA-5020 |  | Testing for Manholes | 21d | 2026-11-24 | 2026-12-17 | SDR-2-CON-ST-ZA-5010 |  | 19d |
|  | 5 | **Backfilling** |  | 2026-12-19 | 2027-01-11 |  |  |  |
| SDR-2-CON-ST-ZA-5030 |  | Backfilling for Manholes | 21d | 2026-12-19 | 2027-01-11 | SDR-2-CON-ST-ZA-5020 |  | 19d |
|  | 5 | **Catch basin** |  | 2026-11-24 | 2027-04-27 |  |  |  |
|  | 1 | **Excavation** |  | 2026-11-24 | 2027-01-17 |  |  |  |
| SDR-2-CON-ST-ZA-6590 |  | Excavation for Catch basin Section 1 | 21d | 2026-11-24 | 2026-12-17 | SDR-2-CON-ST-ZA-5010 |  | 0d |
| SDR-2-CON-ST-ZA-4970 |  | Excavation for Catch basin Section 2 | 21d | 2026-12-24 | 2027-01-17 | SDR-2-CON-ST-ZA-6590 FS+5d |  | 21d |
|  | 2 | **bedding Works** |  | 2027-01-18 | 2027-02-10 |  |  |  |
| SDR-2-CON-ST-ZA-5040 |  | Sand Dedding for Catch basin | 21d | 2027-01-18 | 2027-02-10 | SDR-2-CON-ST-ZA-4970 |  | 21d |
|  | 3 | **Install Catch basin** |  | 2027-02-11 | 2027-03-08 |  |  |  |

| ID | WBS | Task | Duration | Start | Finish | Predecessors | Complete | Total float |
| --- | --- | --- | --- | --- | --- | --- | --- | --- |
| SDR-2-CON-ST-ZA-5050 |  | Install Catch basin | 21d | 2027-02-11 | 2027-03-08 | SDR-2-CON-ST-ZA-5040 |  | 21d |
|  | 4 | **Testing** |  | 2027-03-14 | 2027-03-27 |  |  |  |
| SDR-2-CON-ST-ZA-5060 |  | Testing for Catch basin pipe | 12d | 2027-03-14 | 2027-03-27 | SDR-2-CON-ST-ZA-5050 |  | 21d |
|  | 5 | **Backfilling** |  | 2027-03-28 | 2027-04-27 |  |  |  |
| SDR-2-CON-ST-ZA-7050 |  | Backfilling for Catch basin Section 1 | 15d | 2027-03-28 | 2027-04-13 | SDR-2-CON-ST-ZA-5060 |  | 21d |
| SDR-2-CON-ST-ZA-5070 |  | Backfilling for Catch basin Section 2 | 12d | 2027-04-14 | 2027-04-27 | SDR-2-CON-ST-ZA-7050 |  | 21d |
|  | 18 | **STORM WATER LINE From STA-A2/10 TO STA-A2/1** |  | 2026-07-21 | 2027-05-08 |  |  |  |
|  | 8 | **Pipes Works** |  | 2026-07-21 | 2027-01-10 |  |  |  |
|  | 1 | **Excavation** |  | 2026-07-21 | 2026-08-16 |  |  |  |
| SDR-2-CON-ST-ZA-6600 |  | Excavation for GRP Pipes Section 1 | 21d | 2026-07-21 A | 2026-08-01 A | SDR-2-CON-ST-ZA-6570 SS+4d | 100% |  |
| SDR-2-CON-ST-ZA-5080 |  | Excavation for GRP Pipes Section 2 | 21d | 2026-08-12 A | 2026-08-16 A | SDR-2-CON-ST-ZA-6600 | 100% |  |
|  | 7 | **bedding Works** |  | 2026-10-05 | 2026-10-28 |  |  |  |
| SDR-2-CON-ST-ZA-5140 |  | Sand bedding for GRP Pipes | 21d | 2026-10-05 | 2026-10-28 | SDR-2-CON-ST-ZA-5080 |  | 9d |
|  | 2 | **Pipes Laying** |  | 2026-10-29 | 2026-11-22 |  |  |  |
| SDR-2-CON-ST-ZA-5090 |  | Install ST GRP Pipes | 21d | 2026-10-29 | 2026-11-22 | SDR-2-CON-ST-ZA-5140 |  | 9d |
|  | 6 | **Testing** |  | 2026-11-23 | 2026-12-16 |  |  |  |
| SDR-2-CON-ST-ZA-5130 |  | Testing ST GRP Pipes | 21d | 2026-11-23 | 2026-12-16 | SDR-2-CON-ST-ZA-5090 |  | 9d |
|  | 3 | **Backfilling** |  | 2026-12-17 | 2027-01-10 |  |  |  |
| SDR-2-CON-ST-ZA-5100 |  | Backfilling ST GRP Pipes | 21d | 2026-12-17 | 2027-01-10 | SDR-2-CON-ST-ZA-5130 |  | 9d |
|  | 4 | **Manholes** |  | 2026-10-05 | 2027-03-01 |  |  |  |
|  | 1 | **Excavation** |  | 2026-10-05 | 2026-11-22 |  |  |  |
| SDR-2-CON-ST-ZA-6610 |  | Excavation Manholes Section 1 | 21d | 2026-10-05 | 2026-10-28 | SDR-2-CON-ST-ZA-6600 SS |  | 4d |
| SDR-2-CON-ST-ZA-5110 |  | Excavation Manholes Section 2 | 21d | 2026-10-29 | 2026-11-22 | SDR-2-CON-ST-ZA-6610 |  | 4d |
|  | 2 | **bedding Works** |  | 2026-11-23 | 2026-12-16 |  |  |  |
| SDR-2-CON-ST-ZA-5150 |  | Sand bedding for Manholes | 21d | 2026-11-23 | 2026-12-16 | SDR-2-CON-ST-ZA-5110 |  | 4d |
|  | 3 | **Install Manholes** |  | 2026-12-17 | 2027-01-10 |  |  |  |
| SDR-2-CON-ST-ZA-5160 |  | Manholes Installation | 21d | 2026-12-17 | 2027-01-10 | SDR-2-CON-ST-ZA-5150 |  | 4d |
|  | 4 | **Testing** |  | 2027-01-11 | 2027-02-03 |  |  |  |
| SDR-2-CON-ST-ZA-5170 |  | Testing for Manholes | 21d | 2027-01-11 | 2027-02-03 | SDR-2-CON-ST-ZA-5160 |  | 4d |
|  | 5 | **Backfilling** |  | 2027-02-04 | 2027-03-01 |  |  |  |
| SDR-2-CON-ST-ZA-5180 |  | Backfilling for Manholes | 21d | 2027-02-04 | 2027-03-01 | SDR-2-CON-ST-ZA-5170 |  | 4d |
|  | 5 | **Catch basin** |  | 2026-12-19 | 2027-05-08 |  |  |  |
|  | 1 | **Excavation** |  | 2026-12-19 | 2027-02-04 |  |  |  |
| SDR-2-CON-ST-ZA-6620 |  | Excavation for Catch basin Section 1 | 21d | 2026-12-19 | 2027-01-11 | SDR-2-CON-ST-ZA-6590 |  | 0d |
| SDR-2-CON-ST-ZA-5120 |  | Excavation for Catch basin Section 2 | 21d | 2027-01-12 | 2027-02-04 | SDR-2-CON-ST-ZA-6620 |  | 0d |
|  | 2 | **bedding Works** |  | 2027-02-06 | 2027-03-02 |  |  |  |
| SDR-2-CON-ST-ZA-5190 |  | Sand Dedding for Catch basin | 21d | 2027-02-06 | 2027-03-02 | SDR-2-CON-ST-ZA-5120 |  | 0d |
|  | 3 | **Install Catch basin** |  | 2027-03-03 | 2027-03-31 |  |  |  |
| SDR-2-CON-ST-ZA-5200 |  | Install Catch basin | 21d | 2027-03-03 | 2027-03-31 | SDR-2-CON-ST-ZA-5190, SDR-2-CON-ST-ZA-4200 |  | 0d |
|  | 4 | **Testing** |  | 2027-04-01 | 2027-04-14 |  |  |  |
| SDR-2-CON-ST-ZA-5210 |  | Testing for Catch basin pipe | 12d | 2027-04-01 | 2027-04-14 | SDR-2-CON-ST-ZA-5200 |  | 0d |
|  | 5 | **Backfilling** |  | 2027-04-15 | 2027-05-08 |  |  |  |
| SDR-2-CON-ST-ZA-7060 |  | Backfilling for Catch basin Section 1 | 13d | 2027-04-15 | 2027-04-29 | SDR-2-CON-ST-ZA-5210 |  | 0d |
| SDR-2-CON-ST-ZA-5220 |  | Backfilling for Catch basin Section 2 | 14d | 2027-04-22 | 2027-05-08 | SDR-2-CON-ST-ZA-7060 SS+6d |  | 0d |
|  | 19 | **STORM WATER LINE From IP A7 To Pond A** |  | 2026-08-12 | 2027-04-14 |  |  |  |
|  | 8 | **Pipes Works** |  | 2026-08-12 | 2027-01-11 |  |  |  |
|  | 1 | **Excavation** |  | 2026-08-12 | 2026-10-05 |  |  |  |
| SDR-2-CON-ST-ZA-5830 |  | Excavation for GRP Pipes Section 2 | 21d | 2026-08-12 A | 2026-10-05 | SDR-2-CON-ST-ZA-6630 FF | 90% | 25d |
| SDR-2-CON-ST-ZA-6630 |  | Excavation for GRP Pipes Section 1 | 21d | 2026-08-12 A | 2026-10-05 | SDR-2-CON-ST-ZA-6600 SS+4d | 90% | 20d |
|  | 7 | **bedding Works** |  | 2026-10-06 | 2026-10-29 |  |  |  |
| SDR-2-CON-ST-ZA-5890 |  | Sand bedding for GRP Pipes | 21d | 2026-10-06 | 2026-10-29 | SDR-2-CON-ST-ZA-5830 |  | 25d |
|  | 2 | **Pipes Laying** |  | 2026-10-31 | 2026-11-23 |  |  |  |
| SDR-2-CON-ST-ZA-5840 |  | Install ST GRP Pipes | 21d | 2026-10-31 | 2026-11-23 | SDR-2-CON-ST-ZA-5890 |  | 25d |
|  | 6 | **Testing** |  | 2026-11-24 | 2026-12-17 |  |  |  |
| SDR-2-CON-ST-ZA-5880 |  | Testing ST GRP Pipes | 21d | 2026-11-24 | 2026-12-17 | SDR-2-CON-ST-ZA-5840 |  | 25d |
|  | 3 | **Backfilling** |  | 2026-12-19 | 2027-01-11 |  |  |  |
| SDR-2-CON-ST-ZA-5850 |  | Backfilling ST GRP Pipes | 21d | 2026-12-19 | 2027-01-11 | SDR-2-CON-ST-ZA-5880 |  | 25d |
|  | 4 | **Manholes** |  | 2026-10-05 | 2027-03-04 |  |  |  |
|  | 1 | **Excavation** |  | 2026-10-05 | 2026-11-25 |  |  |  |
| SDR-2-CON-ST-ZA-6640 |  | Excavation Manholes Section 1 | 21d | 2026-10-05 | 2026-10-28 | SDR-2-CON-ST-ZA-6630 SS |  | 20d |
| SDR-2-CON-ST-ZA-5860 |  | Excavation Manholes Section 2 | 21d | 2026-11-02 | 2026-11-25 | SDR-2-CON-ST-ZA-6640 FS+3d |  | 20d |
|  | 2 | **bedding Works** |  | 2026-11-26 | 2026-12-20 |  |  |  |
| SDR-2-CON-ST-ZA-5900 |  | Sand bedding for Manholes | 21d | 2026-11-26 | 2026-12-20 | SDR-2-CON-ST-ZA-5860 |  | 20d |
|  | 3 | **Install Manholes** |  | 2026-12-21 | 2027-01-13 |  |  |  |
| SDR-2-CON-ST-ZA-5910 |  | Manholes Installation | 21d | 2026-12-21 | 2027-01-13 | SDR-2-CON-ST-ZA-5900 |  | 20d |
|  | 4 | **Testing** |  | 2027-01-14 | 2027-02-07 |  |  |  |
| SDR-2-CON-ST-ZA-5920 |  | Testing for Manholes | 21d | 2027-01-14 | 2027-02-07 | SDR-2-CON-ST-ZA-5910 |  | 20d |
|  | 5 | **Backfilling** |  | 2027-02-08 | 2027-03-04 |  |  |  |
| SDR-2-CON-ST-ZA-5930 |  | Backfilling for Manholes | 21d | 2027-02-08 | 2027-03-04 | SDR-2-CON-ST-ZA-5920 |  | 20d |
|  | 5 | **Catch basin** |  | 2026-11-24 | 2027-04-14 |  |  |  |

| ID | WBS | Task | Duration | Start | Finish | Predecessors | Complete | Total float |
| --- | --- | --- | --- | --- | --- | --- | --- | --- |
|  | 1 | **Excavation** |  | 2026-11-24 | 2027-01-11 |  |  |  |
| SDR-2-CON-ST-ZA-6650 |  | Excavation for Catch basin Section 1 | 21d | 2026-11-24 | 2026-12-17 | SDR-2-CON-ST-ZA-6560 |  | 24d |
| SDR-2-CON-ST-ZA-5870 |  | Excavation for Catch basin Section 2 | 21d | 2026-12-19 | 2027-01-11 | SDR-2-CON-ST-ZA-6650 |  | 24d |
|  | 2 | **bedding Works** |  | 2027-01-12 | 2027-02-04 |  |  |  |
| SDR-2-CON-ST-ZA-5940 |  | Sand Dedding for Catch basin | 21d | 2027-01-12 | 2027-02-04 | SDR-2-CON-ST-ZA-5870 |  | 24d |
|  | 3 | **Install Catch basin** |  | 2027-02-06 | 2027-03-02 |  |  |  |
| SDR-2-CON-ST-ZA-5950 |  | Install Catch basin | 21d | 2027-02-06 | 2027-03-02 | SDR-2-CON-ST-ZA-5940 |  | 24d |
|  | 4 | **Testing** |  | 2027-03-03 | 2027-03-16 |  |  |  |
| SDR-2-CON-ST-ZA-5960 |  | Testing for Catch basin pipe | 8d | 2027-03-03 | 2027-03-16 | SDR-2-CON-ST-ZA-5950 |  | 24d |
|  | 5 | **Backfilling** |  | 2027-03-22 | 2027-04-14 |  |  |  |
| SDR-2-CON-ST-ZA-5970 |  | Backfilling for Catch basin | 21d | 2027-03-22 | 2027-04-14 | SDR-2-CON-ST-ZA-5960, SDR-2-CON-ST-ZA-5930 FS+10d, SDR-2-CON-ST-ZA-5180 |  | 20d |
|  | 2 | **Concrete Box culverts** |  | 2026-07-01 | 2026-12-01 |  |  |  |
|  | 6 | **For Pond A** |  | 2026-07-01 | 2026-10-28 |  |  |  |
|  | 1 | **Excavation** |  | 2026-07-01 | 2026-07-15 |  |  |  |
| SDR-2-CON-ST-ZA-3270 |  | Excavation for Box Culvert. | 10d | 2026-07-01 A | 2026-07-15 A | SDR-2-CON-ST-ZA-5080 SS, SDR-2-CON-ST-ZA-6140 | 100% |  |
|  | 2 | **Backfilling with common / suitable excavated material** |  | 2026-07-02 | 2026-07-20 |  |  |  |
| SDR-2-CON-ST-ZA-3280 |  | Backfilling with common / suitable excavated material or with suitable imported material | 8d | 2026-07-02 A | 2026-07-20 A | SDR-2-CON-ST-ZA-3270 | 100% |  |
|  | 3 | **Plain Concrete** |  | 2026-10-05 | 2026-10-11 |  |  |  |
| SDR-2-CON-ST-ZA-3290 |  | Plain Concrete for box culvert | 6d | 2026-10-05 | 2026-10-11 | SDR-2-CON-ST-ZA-3280 |  | 27d |
|  | 4 | **Steel Reinforcement** |  | 2026-10-12 | 2026-10-20 |  |  |  |
| SDR-2-CON-ST-ZA-3300 |  | Steel Reinforcement for box culverts | 8d | 2026-10-12 | 2026-10-20 | SDR-2-CON-ST-ZA-3290 |  | 27d |
|  | 5 | **Reinforced Concrete** |  | 2026-10-21 | 2026-10-28 |  |  |  |
| SDR-2-CON-ST-ZA-3310 |  | Reinforced Concrete for box culvert | 7d | 2026-10-21 | 2026-10-28 | SDR-2-CON-ST-ZA-3300 |  | 27d |
|  | 7 | **For Pond B** |  | 2026-07-01 | 2026-11-07 |  |  |  |
|  | 1 | **Excavation** |  | 2026-07-01 | 2026-07-20 |  |  |  |
| SDR-2-CON-ST-ZA-6250 |  | Excavation for Box Culvert. | 10d | 2026-07-01 A | 2026-07-20 A | SDR-2-CON-RW-ZA-2870 | 100% |  |
|  | 2 | **Backfilling with common / suitable excavated material** |  | 2026-10-05 | 2026-10-13 |  |  |  |
| SDR-2-CON-ST-ZA-6260 |  | Backfilling with common / suitable excavated material or with suitable imported material | 8d | 2026-10-05 | 2026-10-13 | SDR-2-CON-ST-ZA-6250 |  | 17d |
|  | 3 | **Plain Concrete** |  | 2026-10-14 | 2026-10-20 |  |  |  |
| SDR-2-CON-ST-ZA-6270 |  | Plain Concrete for box culvert | 6d | 2026-10-14 | 2026-10-20 | SDR-2-CON-ST-ZA-6260 |  | 17d |
|  | 4 | **Steel Reinforcement** |  | 2026-10-21 | 2026-10-29 |  |  |  |
| SDR-2-CON-ST-ZA-6280 |  | Steel Reinforcement for box culverts | 8d | 2026-10-21 | 2026-10-29 | SDR-2-CON-ST-ZA-6270 |  | 17d |
|  | 5 | **Reinforced Concrete** |  | 2026-10-31 | 2026-11-07 |  |  |  |
| SDR-2-CON-ST-ZA-6290 |  | Reinforced Concrete for box culvert | 7d | 2026-10-31 | 2026-11-07 | SDR-2-CON-ST-ZA-6280 |  | 17d |
|  | 8 | **For Pond C** |  | 2026-10-08 | 2026-12-01 |  |  |  |
|  | 1 | **Excavation** |  | 2026-10-08 | 2026-10-19 |  |  |  |
| SDR-2-CON-ST-ZA-6300 |  | Excavation for Box Culvert. | 10d | 2026-10-08 | 2026-10-19 | SDR-2-CON-ST-ZA-3320 SS |  | 9d |
|  | 2 | **Backfilling with common / suitable excavated material** |  | 2026-10-20 | 2026-10-28 |  |  |  |
| SDR-2-CON-ST-ZA-6310 |  | Backfilling with common / suitable excavated material or with suitable imported material | 8d | 2026-10-20 | 2026-10-28 | SDR-2-CON-ST-ZA-6300 |  | 9d |
|  | 3 | **Plain Concrete** |  | 2026-10-29 | 2026-11-04 |  |  |  |
| SDR-2-CON-ST-ZA-6320 |  | Plain Concrete for box culvert | 6d | 2026-10-29 | 2026-11-04 | SDR-2-CON-ST-ZA-6310 |  | 9d |
|  | 4 | **Steel Reinforcement** |  | 2026-11-05 | 2026-11-14 |  |  |  |
| SDR-2-CON-ST-ZA-6330 |  | Steel Reinforcement for box culverts | 8d | 2026-11-05 | 2026-11-14 | SDR-2-CON-ST-ZA-6320 |  | 9d |
|  | 5 | **Reinforced Concrete** |  | 2026-11-24 | 2026-12-01 |  |  |  |
| SDR-2-CON-ST-ZA-6340 |  | Reinforced Concrete for box culvert | 7d | 2026-11-24 | 2026-12-01 | SDR-2-CON-ST-ZA-6330 FS+8d, SDR-2-CON-ST-ZA-6290 FS+6d, SDR-2-CON-ST-ZA-3310 FS+4d |  | 9d |
|  | 3 | **Drainage works for ponds and open canals** |  | 2026-03-24 | 2027-03-30 |  |  |  |
|  | 7 | **Pond A** |  | 2026-03-24 | 2026-12-23 |  |  |  |
|  | 2 | **Access road for Storm water Ponds** |  | 2026-03-24 | 2026-03-30 |  |  |  |
| SDR-2-CON-ST-ZA-6140 |  | Embankments with common / suitable excavated material | 16d | 2026-03-24 A | 2026-03-30 A | SDR-2-CON-RW-ZA-1010 | 100% |  |
|  | 1 | **Excavation** |  | 2026-03-26 | 2026-06-22 |  |  |  |
| SDR-2-CON-ST-ZA-6660 |  | Excavation for cutting material Section 1 | 20d | 2026-03-26 A | 2026-05-02 A | SDR-2-CON-ST-ZA-6140 | 100% |  |
| SDR-2-CON-ST-ZA-6670 |  | Excavation for cutting material Section 2 | 20d | 2026-05-03 A | 2026-05-24 A | SDR-2-CON-ST-ZA-6660 | 100% |  |
| SDR-2-CON-ST-ZA-6680 |  | Excavation for cutting material Section 3 | 20d | 2026-05-31 A | 2026-06-14 A | SDR-2-CON-ST-ZA-6670 | 100% |  |
| SDR-2-CON-ST-ZA-6130 |  | Excavation for cutting material Section 4 | 20d | 2026-06-09 A | 2026-06-22 A | SDR-2-CON-ST-ZA-6680 | 100% |  |
|  | 3 | **Sand lining for pond bed** |  | 2026-08-31 | 2026-11-04 |  |  |  |
| SDR-2-CON-ST-ZA-6690 |  | Sand lining for pond bed Section 1 & Section 2 | 21d | 2026-08-31 A | 2026-10-07 | SDR-2-CON-ST-ZA-6130, SDR-2-CON-ST-ZA-6710 | 30% | 56d |
| SDR-2-CON-ST-ZA-6150 |  | Sand lining for pond bed Section 3 & Section 4 | 21d | 2026-10-12 | 2026-11-04 | SDR-2-CON-ST-ZA-6690 FS+3d |  | 56d |
|  | 6 | **Pipe Encasements,** |  | 2026-11-05 | 2026-11-29 |  |  |  |
| SDR-2-CON-ST-ZA-6180 |  | Pipe encasement | 21d | 2026-11-05 | 2026-11-29 | SDR-2-CON-ST-ZA-6150 |  | 56d |
|  | 5 | **Concrete Outfalls** |  | 2026-11-30 | 2026-12-23 |  |  |  |
| SDR-2-CON-ST-ZA-6170 |  | Concrete Outfall structure. | 21d | 2026-11-30 | 2026-12-23 | SDR-2-CON-ST-ZA-6180 |  | 56d |
|  | 4 | **Loose Riprap** |  | 2026-07-20 | 2026-07-30 |  |  |  |
| SDR-2-CON-ST-ZA-6160 |  | Loose Riprap work | 21d | 2026-07-20 A | 2026-07-30 A | SDR-2-CON-ST-ZA-6170 | 100% |  |
|  | 8 | **Pond B** |  | 2026-03-25 | 2027-03-30 |  |  |  |
|  | 2 | **Access road for Storm water Ponds** |  | 2026-03-25 | 2026-03-30 |  |  |  |
| SDR-2-CON-ST-ZA-6200 |  | Embankments with common / suitable excavated material | 15d | 2026-03-25 A | 2026-03-30 A | SDR-2-CON-ST-ZA-6140 FS+12d | 100% |  |
|  | 1 | **Excavation** |  | 2026-03-29 | 2026-06-23 |  |  |  |
| SDR-2-CON-ST-ZA-6700 |  | Excavation for cutting material. Section 1 | 21d | 2026-03-29 A | 2026-05-02 A | SDR-2-CON-ST-ZA-6200 | 100% |  |
| SDR-2-CON-ST-ZA-6710 |  | Excavation for cutting material. Section 2 | 21d | 2026-05-04 A | 2026-05-31 A | SDR-2-CON-ST-ZA-6700 | 100% |  |
| SDR-2-CON-ST-ZA-6190 |  | Excavation for cutting material. Section 3 | 21d | 2026-06-02 A | 2026-06-23 A | SDR-2-CON-ST-ZA-6710 FS+7d | 100% |  |

| ID | WBS | Task | Duration | Start | Finish | Predecessors | Complete | Total float |
| --- | --- | --- | --- | --- | --- | --- | --- | --- |
|  | 3 | **Sand lining for pond bed** |  | 2026-08-31 | 2026-12-23 |  |  |  |
| SDR-2-CON-ST-ZA-6720 |  | Sand lining for pond bed Section 1 | 21d | 2026-08-31 A | 2026-12-01 | SDR-2-CON-ST-ZA-6190, SDR-2-CON-ST-ZA-6340 FF | 30% | 19d |
| SDR-2-CON-ST-ZA-6210 |  | Sand lining for pond bed Section 2 | 19d | 2026-12-02 | 2026-12-23 | SDR-2-CON-ST-ZA-6720 |  | 19d |
|  | 6 | **Pipe Encasements,** |  | 2026-12-24 | 2027-01-17 |  |  |  |
| SDR-2-CON-ST-ZA-6240 |  | Pipe encasement | 21d | 2026-12-24 | 2027-01-17 | SDR-2-CON-ST-ZA-6210 |  | 19d |
|  | 5 | **Concrete Outfalls** |  | 2027-01-18 | 2027-02-10 |  |  |  |
| SDR-2-CON-ST-ZA-6230 |  | Concrete Outfall structure. | 21d | 2027-01-18 | 2027-02-10 | SDR-2-CON-ST-ZA-6240 |  | 19d |
|  | 4 | **Loose Riprap** |  | 2027-03-02 | 2027-03-30 |  |  |  |
| SDR-2-CON-ST-ZA-6220 |  | Loose Riprap work | 21d | 2027-03-02 | 2027-03-30 | SDR-2-CON-ST-ZA-6230, SDR-2-CON-ST-ZA-5180, SDR-2-CON-ST-ZA-5030 FS+9d, SDR-2-CON-ST-ZA-4880 FS+14d, SDR-2-CON-ST-ZA-4730 FS+7d, SDR-2-CON-ST-ZA-4580 FS+5d, SDR-2-CON-ST-ZA-4280 FS+14d, SDR-2-CON-ST-ZA-4130, SDR-2-CON-ST-ZA-3760 FF |  | 4d |
|  | 9 | **Pond C** |  | 2026-04-09 | 2027-03-02 |  |  |  |
|  | 2 | **Access road for Storm water Ponds** |  | 2026-04-27 | 2026-07-20 |  |  |  |
| SDR-2-CON-ST-ZA-3330 |  | Embankments with common / suitable excavated material | 15d | 2026-04-27 A | 2026-07-20 A | SDR-2-CON-ST-ZA-6200 | 100% |  |
|  | 1 | **Excavation** |  | 2026-04-09 | 2026-11-01 |  |  |  |
| SDR-2-CON-ST-ZA-6730 |  | Excavation for cutting material. Section 1 | 21d | 2026-04-09 A | 2026-04-22 A | SDR-2-CON-ST-ZA-3330 | 100% |  |
| SDR-2-CON-ST-ZA-6740 |  | Excavation for cutting material. Section 2 | 21d | 2026-08-31 A | 2026-10-07 | SDR-2-CON-ST-ZA-6730 | 25% | 8d |
| SDR-2-CON-ST-ZA-3320 |  | Excavation for cutting material. Section 3 | 21d | 2026-10-08 | 2026-11-01 | SDR-2-CON-ST-ZA-6740 |  | 8d |
|  | 3 | **Sand lining for pond bed** |  | 2026-11-02 | 2026-12-17 |  |  |  |
| SDR-2-CON-ST-ZA-6750 |  | Sand lining for pond bed Section 1 | 20d | 2026-11-02 | 2026-11-24 | SDR-2-CON-ST-ZA-3320 |  | 8d |
| SDR-2-CON-ST-ZA-3340 |  | Sand lining for pond bed Section 2 &Section 3 | 20d | 2026-11-25 | 2026-12-17 | SDR-2-CON-ST-ZA-6750 |  | 8d |
|  | 6 | **Pipe Encasements,** |  | 2026-12-19 | 2027-01-11 |  |  |  |
| SDR-2-CON-ST-ZA-3370 |  | Pipe encasement | 21d | 2026-12-19 | 2027-01-11 | SDR-2-CON-ST-ZA-3340 |  | 8d |
|  | 5 | **Concrete Outfalls** |  | 2027-01-12 | 2027-02-04 |  |  |  |
| SDR-2-CON-ST-ZA-3360 |  | Concrete Outfall structure. | 21d | 2027-01-12 | 2027-02-04 | SDR-2-CON-ST-ZA-3370 |  | 8d |
|  | 4 | **Loose Riprap** |  | 2027-02-06 | 2027-03-02 |  |  |  |
| SDR-2-CON-ST-ZA-3350 |  | Loose Riprap work | 21d | 2027-02-06 | 2027-03-02 | SDR-2-CON-ST-ZA-3360 |  | 8d |
|  | ZG | **ZONE G** |  | 2026-04-30 | 2026-10-14 |  |  |  |
|  | 11 | **STORM WATER LINE IN ( PH2-G-MCE0 )** |  | 2026-04-30 | 2026-10-07 |  |  |  |
|  | 8 | **Pipes Works** |  | 2026-04-30 | 2026-08-31 |  |  |  |
|  | 1 | **Excavation** |  | 2026-04-30 | 2026-06-08 |  |  |  |
| SDR-2-CON-ST-ZA-6880 |  | Excavation for GRP Pipes Section 1 | 21d | 2026-04-30 A | 2026-06-01 A | SDR-2-CON-ST-ZA-7000 SS | 100% |  |
| SDR-2-CON-ST-ZA-6760 |  | Excavation for GRP Pipes Section 2 | 21d | 2026-05-06 A | 2026-06-04 A | SDR-2-CON-ST-ZA-6880, SDR-2-CON-ST-ZA-6710 | 100% |  |
| SDR-2-CON-ST-ZA-5380 |  | Excavation for GRP Pipes Section 3 | 21d | 2026-06-04 A | 2026-06-08 A | SDR-2-CON-ST-ZA-6760 | 100% |  |
|  | 7 | **bedding Works** |  | 2026-05-16 | 2026-06-01 |  |  |  |
| SDR-2-CON-ST-ZA-5440 |  | Sand bedding for GRP Pipes | 21d | 2026-05-16 A | 2026-06-01 A | SDR-2-CON-ST-ZA-5380 | 100% |  |
|  | 2 | **Pipes Laying** |  | 2026-05-17 | 2026-06-18 |  |  |  |
| SDR-2-CON-ST-ZA-5390 |  | Install ST GRP Pipes | 21d | 2026-05-17 A | 2026-06-18 A | SDR-2-CON-ST-ZA-5440 | 100% |  |
|  | 6 | **Testing** |  | 2026-08-01 | 2026-08-08 |  |  |  |
| SDR-2-CON-ST-ZA-5430 |  | Testing ST GRP Pipes | 21d | 2026-08-01 A | 2026-08-08 A | SDR-2-CON-ST-ZA-5390 | 100% |  |
|  | 3 | **Backfilling** |  | 2026-08-09 | 2026-08-31 |  |  |  |
| SDR-2-CON-ST-ZA-5400 |  | Backfilling ST GRP Pipes | 21d | 2026-08-09 A | 2026-08-31 A | SDR-2-CON-ST-ZA-5430 | 100% |  |
|  | 4 | **Manholes** |  | 2026-05-13 | 2026-10-07 |  |  |  |
|  | 1 | **Excavation** |  | 2026-05-13 | 2026-06-09 |  |  |  |
| SDR-2-CON-ST-ZA-6890 |  | Excavation Manholes Section 1 | 21d | 2026-05-13 A | 2026-06-01 A | SDR-2-CON-ST-ZA-6880 SS | 100% |  |
| SDR-2-CON-ST-ZA-6770 |  | Excavation Manholes Section 2 | 21d | 2026-05-14 A | 2026-06-02 A | SDR-2-CON-ST-ZA-6890 | 100% |  |
| SDR-2-CON-ST-ZA-5410 |  | Excavation Manholes Section 3 | 21d | 2026-06-04 A | 2026-06-09 A | SDR-2-CON-ST-ZA-6770 FS+3d | 100% |  |
|  | 2 | **bedding Works** |  | 2026-05-18 | 2026-06-11 |  |  |  |
| SDR-2-CON-ST-ZA-5450 |  | Sand bedding for Manholes | 21d | 2026-05-18 A | 2026-06-11 A | SDR-2-CON-ST-ZA-5410 | 100% |  |
|  | 3 | **Install Manholes** |  | 2026-06-01 | 2026-07-21 |  |  |  |
| SDR-2-CON-ST-ZA-5460 |  | Manholes Installation Section 2 | 21d | 2026-06-01 A | 2026-07-21 A | SDR-2-CON-ST-ZA-6780 FS+5d | 100% |  |
| SDR-2-CON-ST-ZA-6780 |  | Manholes Installation Section 1 | 21d | 2026-06-01 A | 2026-06-01 A | SDR-2-CON-ST-ZA-5450 | 100% |  |
|  | 4 | **Testing** |  | 2026-08-31 | 2026-10-07 |  |  |  |
| SDR-2-CON-ST-ZA-5470 |  | Testing for Manholes | 21d | 2026-08-31 A | 2026-10-07 | SDR-2-CON-ST-ZA-5460 | 25% | 157d |
|  | 5 | **Backfilling** |  | 2026-08-16 | 2026-08-20 |  |  |  |
| SDR-2-CON-ST-ZA-5480 |  | Backfilling for Manholes | 21d | 2026-08-16 A | 2026-08-20 A | SDR-2-CON-ST-ZA-5470 SS | 100% |  |
|  | 5 | **Catch basin** |  | 2026-08-10 | 2026-08-27 |  |  |  |
|  | 1 | **Excavation** |  | 2026-08-10 | 2026-08-15 |  |  |  |
| SDR-2-CON-ST-ZA-5420 |  | Excavation for Catch basin Section 2 | 21d | 2026-08-10 A | 2026-08-15 A | SDR-2-CON-ST-ZA-6790 FS+3d | 100% |  |
| SDR-2-CON-ST-ZA-6790 |  | Excavation for Catch basin Section 1 | 21d | 2026-08-10 A | 2026-08-15 A | SDR-2-CON-ST-ZA-6890, SDR-2-CON-ST-ZA-6780 | 100% |  |
|  | 2 | **bedding Works** |  | 2026-08-15 | 2026-08-18 |  |  |  |
| SDR-2-CON-ST-ZA-5490 |  | Sand Dedding for Catch basin | 21d | 2026-08-15 A | 2026-08-18 A | SDR-2-CON-ST-ZA-5420 | 100% |  |
|  | 3 | **Install Catch basin** |  | 2026-08-18 | 2026-08-20 |  |  |  |
| SDR-2-CON-ST-ZA-5500 |  | Install Catch basin | 21d | 2026-08-18 A | 2026-08-20 A | SDR-2-CON-ST-ZA-5490 | 100% |  |
|  | 4 | **Testing** |  | 2026-08-18 | 2026-08-20 |  |  |  |
| SDR-2-CON-ST-ZA-5510 |  | Testing for Catch basin pipe | 8d | 2026-08-18 A | 2026-08-20 A | SDR-2-CON-ST-ZA-5500 | 100% |  |
|  | 5 | **Backfilling** |  | 2026-08-20 | 2026-08-27 |  |  |  |
| SDR-2-CON-ST-ZA-5520 |  | Backfilling for Catch basin Part 2 | 13d | 2026-08-20 A | 2026-08-27 A | SDR-2-CON-ST-ZA-6870 | 100% |  |
| SDR-2-CON-ST-ZA-6870 |  | Backfilling for Catch basin Part 1 | 13d | 2026-08-20 A | 2026-08-27 A | SDR-2-CON-ST-ZA-5510 | 100% |  |
|  | 12 | **STORM WATER LINE IN ( PH2-G-MCF0 )** |  | 2026-05-09 | 2026-10-07 |  |  |  |
|  | 8 | **Pipes Works** |  | 2026-05-09 | 2026-08-16 |  |  |  |
|  | 1 | **Excavation** |  | 2026-05-09 | 2026-05-24 |  |  |  |

| ID | WBS | Task | Duration | Start | Finish | Predecessors | Complete | Total float |
| --- | --- | --- | --- | --- | --- | --- | --- | --- |
| SDR-2-CON-ST-ZA-6800 |  | Excavation for GRP Pipes Section 1 | 21d | 2026-05-09 A | 2026-05-18 A | SDR-2-CON-ST-ZA-6880 SS+4d | 100% |  |
| SDR-2-CON-ST-ZA-5530 |  | Excavation for GRP Pipes Section 2 | 21d | 2026-05-18 A | 2026-05-24 A | SDR-2-CON-ST-ZA-6800 | 100% |  |
|  | 7 | **bedding Works** |  | 2026-05-18 | 2026-06-04 |  |  |  |
| SDR-2-CON-ST-ZA-5590 |  | Sand bedding for GRP Pipes | 21d | 2026-05-18 A | 2026-06-04 A | SDR-2-CON-ST-ZA-5530 | 100% |  |
|  | 2 | **Pipes Laying** |  | 2026-06-04 | 2026-07-12 |  |  |  |
| SDR-2-CON-ST-ZA-5540 |  | Install ST GRP Pipes | 21d | 2026-06-04 A | 2026-07-12 A | SDR-2-CON-ST-ZA-5590 | 100% |  |
|  | 6 | **Testing** |  | 2026-07-14 | 2026-07-20 |  |  |  |
| SDR-2-CON-ST-ZA-5580 |  | Testing ST GRP Pipes | 21d | 2026-07-14 A | 2026-07-20 A | SDR-2-CON-ST-ZA-5540 | 100% |  |
|  | 3 | **Backfilling** |  | 2026-08-09 | 2026-08-16 |  |  |  |
| SDR-2-CON-ST-ZA-5550 |  | Backfilling ST GRP Pipes | 21d | 2026-08-09 A | 2026-08-16 A | SDR-2-CON-ST-ZA-5580 | 100% |  |
|  | 4 | **Manholes** |  | 2026-05-18 | 2026-10-07 |  |  |  |
|  | 1 | **Excavation** |  | 2026-05-18 | 2026-06-06 |  |  |  |
| SDR-2-CON-ST-ZA-6810 |  | Excavation Manholes Section 1 | 21d | 2026-05-18 A | 2026-05-31 A | SDR-2-CON-ST-ZA-6800 SS | 100% |  |
| SDR-2-CON-ST-ZA-5560 |  | Excavation Manholes Section 2 | 21d | 2026-06-02 A | 2026-06-06 A | SDR-2-CON-ST-ZA-6810 FS+3d | 100% |  |
|  | 2 | **bedding Works** |  | 2026-05-23 | 2026-06-06 |  |  |  |
| SDR-2-CON-ST-ZA-5600 |  | Sand bedding for Manholes | 21d | 2026-05-23 A | 2026-06-06 A | SDR-2-CON-ST-ZA-5560 | 100% |  |
|  | 3 | **Install Manholes** |  | 2026-06-01 | 2026-07-20 |  |  |  |
| SDR-2-CON-ST-ZA-5610 |  | Manholes Installation | 21d | 2026-06-01 A | 2026-07-20 A | SDR-2-CON-ST-ZA-5600 | 100% |  |
|  | 4 | **Testing** |  | 2026-08-31 | 2026-10-07 |  |  |  |
| SDR-2-CON-ST-ZA-5620 |  | Testing for Manholes | 21d | 2026-08-31 A | 2026-10-07 | SDR-2-CON-ST-ZA-5610 FS+5d | 25% | 104d |
|  | 5 | **Backfilling** |  | 2026-08-16 | 2026-08-20 |  |  |  |
| SDR-2-CON-ST-ZA-5630 |  | Backfilling for Manholes | 21d | 2026-08-16 A | 2026-08-20 A | SDR-2-CON-ST-ZA-5620 SS | 100% |  |
|  | 5 | **Catch basin** |  | 2026-06-12 | 2026-08-30 |  |  |  |
|  | 1 | **Excavation** |  | 2026-06-12 | 2026-07-01 |  |  |  |
| SDR-2-CON-ST-ZA-6820 |  | Excavation for Catch basin Section 1 | 21d | 2026-06-12 A | 2026-07-01 A | SDR-2-CON-ST-ZA-5610 | 100% |  |
| SDR-2-CON-ST-ZA-5570 |  | Excavation for Catch basin Section 2 | 21d | 2026-06-22 A | 2026-07-01 A | SDR-2-CON-ST-ZA-6820 | 100% |  |
|  | 2 | **bedding Works** |  | 2026-08-09 | 2026-08-12 |  |  |  |
| SDR-2-CON-ST-ZA-5640 |  | Sand Dedding for Catch basin | 21d | 2026-08-09 A | 2026-08-12 A | SDR-2-CON-ST-ZA-5570 | 100% |  |
|  | 3 | **Install Catch basin** |  | 2026-08-13 | 2026-08-18 |  |  |  |
| SDR-2-CON-ST-ZA-6830 |  | Install Catch basin Section 1 | 21d | 2026-08-13 A | 2026-08-16 A | SDR-2-CON-ST-ZA-5640 | 100% |  |
| SDR-2-CON-ST-ZA-5650 |  | Install Catch basin Section 2 | 21d | 2026-08-16 A | 2026-08-18 A | SDR-2-CON-ST-ZA-6830, SDR-2-CON-ST-ZA-5640, SDR-2-CON-ST-ZA-5400 FS+4d, SDR-2-CON-ST-ZA-5550 | 100% |  |
|  | 4 | **Testing** |  | 2026-08-18 | 2026-08-19 |  |  |  |
| SDR-2-CON-ST-ZA-5660 |  | Testing for Catch basin pipe | 21d | 2026-08-18 A | 2026-08-19 A | SDR-2-CON-ST-ZA-5650 | 100% |  |
|  | 5 | **Backfilling** |  | 2026-08-20 | 2026-08-30 |  |  |  |
| SDR-2-CON-ST-ZA-5670 |  | Backfilling for Catch basin | 15d | 2026-08-20 A | 2026-08-30 A | SDR-2-CON-ST-ZA-5660 | 100% |  |
|  | 13 | **STORM WATER LINE IN ( PH2-G-MCG0 )** |  | 2026-05-08 | 2026-10-14 |  |  |  |
|  | 8 | **Pipes Works** |  | 2026-05-08 | 2026-08-17 |  |  |  |
|  | 1 | **Excavation** |  | 2026-05-08 | 2026-05-31 |  |  |  |
| SDR-2-CON-ST-ZA-6840 |  | Excavation for GRP Pipes Section 1 | 21d | 2026-05-08 A | 2026-05-18 A | SDR-2-CON-ST-ZA-6800 SS+4d | 100% |  |
| SDR-2-CON-ST-ZA-5980 |  | Excavation for GRP Pipes Section 2 | 21d | 2026-05-18 A | 2026-05-31 A | SDR-2-CON-ST-ZA-6840 FS+8d | 100% |  |
|  | 7 | **bedding Works** |  | 2026-06-01 | 2026-06-08 |  |  |  |
| SDR-2-CON-ST-ZA-6040 |  | Sand bedding for GRP Pipes | 21d | 2026-06-01 A | 2026-06-08 A | SDR-2-CON-ST-ZA-5980 | 100% |  |
|  | 2 | **Pipes Laying** |  | 2026-06-06 | 2026-07-06 |  |  |  |
| SDR-2-CON-ST-ZA-5990 |  | Install ST GRP Pipes | 21d | 2026-06-06 A | 2026-07-06 A | SDR-2-CON-ST-ZA-6040 | 100% |  |
|  | 6 | **Testing** |  | 2026-07-07 | 2026-07-20 |  |  |  |
| SDR-2-CON-ST-ZA-6030 |  | Testing ST GRP Pipes | 21d | 2026-07-07 A | 2026-07-20 A | SDR-2-CON-ST-ZA-5990 | 100% |  |
|  | 3 | **Backfilling** |  | 2026-08-16 | 2026-08-17 |  |  |  |
| SDR-2-CON-ST-ZA-6000 |  | Backfilling ST GRP Pipes | 21d | 2026-08-16 A | 2026-08-17 A | SDR-2-CON-ST-ZA-6030 | 100% |  |
|  | 4 | **Manholes** |  | 2026-05-16 | 2026-10-14 |  |  |  |
|  | 1 | **Excavation** |  | 2026-05-16 | 2026-06-01 |  |  |  |
| SDR-2-CON-ST-ZA-6850 |  | Excavation Manholes Section 1 | 21d | 2026-05-16 A | 2026-05-23 A | SDR-2-CON-ST-ZA-6840 SS | 100% |  |
| SDR-2-CON-ST-ZA-6010 |  | Excavation Manholes Section 2 | 21d | 2026-05-23 A | 2026-06-01 A | SDR-2-CON-ST-ZA-6850 FS+3d | 100% |  |
|  | 2 | **bedding Works** |  | 2026-06-02 | 2026-06-06 |  |  |  |
| SDR-2-CON-ST-ZA-6050 |  | Sand bedding for Manholes | 21d | 2026-06-02 A | 2026-06-06 A | SDR-2-CON-ST-ZA-6010, SDR-2-PRO-DEL-E-1160 SS | 100% |  |
|  | 3 | **Install Manholes** |  | 2026-06-07 | 2026-07-01 |  |  |  |
| SDR-2-CON-ST-ZA-6060 |  | Manholes Installation | 21d | 2026-06-07 A | 2026-07-01 A | SDR-2-CON-ST-ZA-6050 | 100% |  |
|  | 4 | **Testing** |  | 2026-09-07 | 2026-10-14 |  |  |  |
| SDR-2-CON-ST-ZA-6070 |  | Testing for Manholes | 21d | 2026-09-07 A | 2026-10-14 | SDR-2-CON-ST-ZA-6060 | 25% | 104d |
|  | 5 | **Backfilling** |  | 2026-08-17 | 2026-08-20 |  |  |  |
| SDR-2-CON-ST-ZA-6080 |  | Backfilling for Manholes | 21d | 2026-08-17 A | 2026-08-20 A | SDR-2-CON-ST-ZA-6070 SS | 100% |  |
|  | 5 | **Catch basin** |  | 2026-06-08 | 2026-08-29 |  |  |  |
|  | 1 | **Excavation** |  | 2026-06-08 | 2026-07-16 |  |  |  |
| SDR-2-CON-ST-ZA-6860 |  | Excavation for Catch basin Section 1 | 20d | 2026-06-08 A | 2026-07-16 A | SDR-2-CON-ST-ZA-6060 FS+18d | 100% |  |
| SDR-2-CON-ST-ZA-6020 |  | Excavation for Catch basin Section 2 | 20d | 2026-06-15 A | 2026-07-16 A | SDR-2-CON-ST-ZA-6860 | 100% |  |
|  | 2 | **bedding Works** |  | 2026-07-23 | 2026-07-28 |  |  |  |
| SDR-2-CON-ST-ZA-6090 |  | Sand Dedding for Catch basin | 21d | 2026-07-23 A | 2026-07-28 A | SDR-2-CON-ST-ZA-6020 | 100% |  |
|  | 3 | **Install Catch basin** |  | 2026-07-27 | 2026-08-01 |  |  |  |
| SDR-2-CON-ST-ZA-6100 |  | Install Catch basin | 21d | 2026-07-27 A | 2026-08-01 A | SDR-2-CON-ST-ZA-6090 | 100% |  |
|  | 4 | **Testing** |  | 2026-08-03 | 2026-08-10 |  |  |  |
| SDR-2-CON-ST-ZA-6110 |  | Testing for Catch basin pipe | 8d | 2026-08-03 A | 2026-08-10 A | SDR-2-CON-ST-ZA-6100 | 100% |  |

| ID | WBS | Task | Duration | Start | Finish | Predecessors | Complete | Total float |
| --- | --- | --- | --- | --- | --- | --- | --- | --- |
|  | 5 | **Backfilling** |  | 2026-08-09 | 2026-08-29 |  |  |  |
| SDR-2-CON-ST-ZA-6120 |  | Backfilling for Catch basin | 21d | 2026-08-09 A | 2026-08-29 A | SDR-2-CON-ST-ZA-6110 | 100% |  |
|  | SN | **Sewerage Network** |  | 2026-05-18 | 2027-03-31 |  |  |  |
|  | ZA | **ZONE A** |  | 2026-05-18 | 2027-03-31 |  |  |  |
|  | 3 | **LINE 1 ( PH2-A-MCA0 )** |  | 2026-06-01 | 2026-11-22 |  |  |  |
|  | 7 | **Pipes Work** |  | 2026-06-01 | 2026-11-22 |  |  |  |
|  | 1 | **Excavation** |  | 2026-06-01 | 2026-07-21 |  |  |  |
| SDR-2-CON-SE-ZA-2460 |  | Excavation for GRP Pipe 200mm Diameter Section 1 | 21d | 2026-06-01 A | 2026-06-08 A | SDR-2-CON-ST-ZA-4780 | 100% |  |
| SDR-2-CON-SE-ZA-1000 |  | Excavation for GRP Pipe 200mm Diameter Section 2 | 20d | 2026-06-08 A | 2026-07-21 A | SDR-2-CON-SE-ZA-2460 FS+3d, SDR-2-PRO-DEL-E-1190 SS, SDR-2-PRO-DEL-E-1180 SS, SDR-2-PRO-DEL-E-1170 SS, SDR-2-PRO-DES-C-1020 SS | 100% |  |
|  | 5 | **bedding Works** |  | 2026-06-15 | 2026-07-25 |  |  |  |
| SDR-2-CON-SE-ZA-1420 |  | Sand bedding for GRP Pipe 200mm Diameter | 21d | 2026-06-15 A | 2026-07-25 A | SDR-2-CON-SE-ZA-1000 | 100% |  |
|  | 2 | **Pipes Laying** |  | 2026-06-22 | 2026-10-05 |  |  |  |
| SDR-2-CON-SE-ZA-1010 |  | 200 mm GRP Pipe Laying | 21d | 2026-06-22 A | 2026-10-05 | SDR-2-CON-SE-ZA-1000, SDR-2-CON-SE-ZA-1420 | 90% | 124d |
|  | 3 | **Testing** |  | 2026-08-16 | 2026-10-28 |  |  |  |
| SDR-2-CON-SE-ZA-1020 |  | Testing of 200 mm GRP Pipe. | 21d | 2026-08-16 A | 2026-10-28 | SDR-2-CON-SE-ZA-1010 FF, SDR-2-CON-RW-ZA-1760 FF | 55% | 104.1d |
|  | 6 | **Backfilling** |  | 2026-10-28 | 2026-11-22 |  |  |  |
| SDR-2-CON-SE-ZA-1430 |  | Backfilling of 200 mm GRP Pipe. | 21d | 2026-10-28 | 2026-11-22 | SDR-2-CON-SE-ZA-1020 |  | 104.1d |
|  | 4 | **Manholes** |  | 2026-06-15 | 2026-10-29 |  |  |  |
|  | 1 | **Excavation** |  | 2026-06-15 | 2026-07-21 |  |  |  |
| SDR-2-CON-SE-ZA-2470 |  | Excavation for manhole. Section 1 | 21d | 2026-06-15 A | 2026-06-24 A | SDR-2-CON-SE-ZA-2460 SS | 100% |  |
| SDR-2-CON-SE-ZA-1030 |  | Excavation for manhole. Section 2 | 21d | 2026-07-01 A | 2026-07-21 A | SDR-2-CON-SE-ZA-2470, SDR-2-CON-RW-ZA-1040 | 100% |  |
|  | 2 | **bedding Works** |  | 2026-07-05 | 2026-07-23 |  |  |  |
| SDR-2-CON-SE-ZA-1450 |  | Sand bedding for manhole. | 21d | 2026-07-05 A | 2026-07-23 A | SDR-2-CON-SE-ZA-1030 | 100% |  |
|  | 3 | **Install Manholes** |  | 2026-07-06 | 2026-10-28 |  |  |  |
| SDR-2-CON-SE-ZA-1040 |  | Manhole Installation | 21d | 2026-07-06 A | 2026-10-28 | SDR-2-CON-RW-ZA-3110, SDR-2-CON-SE-ZA-1030, SDR-2-PRO-MAS-C-1070, SDR-2-PRO-ST-M-1030 FF, SDR-2-CON-SE-ZA-1450 | 90% | 159.1d |
|  | 4 | **Testing** |  | 2026-07-09 | 2026-10-05 |  |  |  |
| SDR-2-CON-SE-ZA-1050 |  | Testing | 21d | 2026-07-09 A | 2026-10-05 | SDR-2-CON-RW-ZA-2900 | 60% | 134d |
|  | 5 | **Backfilling** |  | 2026-10-06 | 2026-10-29 |  |  |  |
| SDR-2-CON-SE-ZA-1440 |  | Backfilling | 21d | 2026-10-06 | 2026-10-29 | SDR-2-CON-SE-ZA-1050, SDR-2-CON-ST-ZA-6080 FS+11d, SDR-2-CON-ST-ZA-6000 FS+9d, SDR-2-CON-ST-ZA-5630 FS+10d |  | 134d |
|  | 4 | **LINE 2 AND LINE 3 ( PH2-A-MCC0 )** |  | 2026-06-08 | 2027-02-03 |  |  |  |
|  | 7 | **Pipes Work** |  | 2026-06-08 | 2027-02-03 |  |  |  |
|  | 1 | **Excavation** |  | 2026-06-08 | 2026-06-22 |  |  |  |
| SDR-2-CON-SE-ZA-2480 |  | Excavation for GRP Pipe 200mm Diameter Section 1 | 21d | 2026-06-08 A | 2026-06-15 A | SDR-2-CON-SE-ZA-2460 SS+10d | 100% |  |
| SDR-2-CON-SE-ZA-1460 |  | Excavation for GRP Pipe 200mm Diameter Section 2 | 20d | 2026-06-15 A | 2026-06-22 A | SDR-2-CON-SE-ZA-2480 FS+7d | 100% |  |
|  | 5 | **bedding Works** |  | 2026-07-12 | 2026-07-20 |  |  |  |
| SDR-2-CON-SE-ZA-1520 |  | Sand bedding for GRP Pipe 200mm Diameter | 21d | 2026-07-12 A | 2026-07-20 A | SDR-2-CON-SE-ZA-1460 | 100% |  |
|  | 2 | **Pipes Laying** |  | 2026-07-22 | 2026-11-08 |  |  |  |
| SDR-2-CON-SE-ZA-1470 |  | 200 mm GRP Pipe Laying | 21d | 2026-07-22 A | 2026-11-08 | SDR-2-CON-SE-ZA-1460, SDR-2-CON-SE-ZA-1520, SDR-2-CON-RW-ZG-2260 FF | 90% | 105d |
|  | 3 | **Testing** |  | 2026-08-17 | 2027-01-10 |  |  |  |
| SDR-2-CON-SE-ZA-1480 |  | Testing of 200 mm GRP Pipe. | 21d | 2026-08-17 A | 2027-01-10 | SDR-2-CON-ST-ZA-5550, SDR-2-CON-RW-ZA-1050 FS+2d, SDR-2-CON-SE-ZA-1470 FF, SDR-2-CON-ST-ZA-5100 FF, SDR-2-CON-ST-ZA-1300 FF | 60% | 51d |
|  | 6 | **Backfilling** |  | 2027-01-11 | 2027-02-03 |  |  |  |
| SDR-2-CON-SE-ZA-1530 |  | Backfilling of 200 mm GRP Pipe. | 21d | 2027-01-11 | 2027-02-03 | SDR-2-CON-SE-ZA-1480 |  | 51d |
|  | 4 | **Manholes** |  | 2026-06-11 | 2026-12-02 |  |  |  |
|  | 1 | **Excavation** |  | 2026-06-11 | 2026-06-30 |  |  |  |
| SDR-2-CON-SE-ZA-2490 |  | Excavation for manhole. Section 1 | 21d | 2026-06-11 A | 2026-06-20 A | SDR-2-CON-SE-ZA-2480 SS | 100% |  |
| SDR-2-CON-SE-ZA-1490 |  | Excavation for manhole. Section 2 | 21d | 2026-06-21 A | 2026-06-30 A | SDR-2-CON-SE-ZA-2490 FS+3d | 100% |  |
|  | 2 | **bedding Works** |  | 2026-07-01 | 2026-07-13 |  |  |  |
| SDR-2-CON-SE-ZA-1550 |  | Sand bedding for manhole. | 21d | 2026-07-01 A | 2026-07-13 A | SDR-2-CON-SE-ZA-1490 | 100% |  |
|  | 3 | **Install Manholes** |  | 2026-07-07 | 2026-10-05 |  |  |  |
| SDR-2-CON-SE-ZA-1500 |  | Manhole Installation | 21d | 2026-07-07 A | 2026-10-05 | SDR-2-CON-SE-ZA-1490, SDR-2-CON-SE-ZA-1550, SDR-2-CON-RW-ZG-2500 FF | 90% | 179d |
|  | 4 | **Testing** |  | 2026-08-26 | 2026-11-08 |  |  |  |
| SDR-2-CON-SE-ZA-1510 |  | Testing | 21d | 2026-08-26 A | 2026-11-08 | SDR-2-CON-ST-ZA-5550, SDR-2-CON-ST-ZA-5400, SDR-2-CON-RW-ZG-1060 FF | 45% | 105d |
|  | 5 | **Backfilling** |  | 2026-11-09 | 2026-12-02 |  |  |  |
| SDR-2-CON-SE-ZA-1540 |  | Backfilling | 21d | 2026-11-09 | 2026-12-02 | SDR-2-CON-SE-ZA-1510 |  | 105d |
|  | 5 | **LINE 4 AND LINE 5 ( PH2-A-MCD0 )** |  | 2026-05-18 | 2027-03-31 |  |  |  |
|  | 7 | **Pipes Work** |  | 2026-05-18 | 2027-02-03 |  |  |  |
|  | 1 | **Excavation** |  | 2026-05-18 | 2026-06-15 |  |  |  |
| SDR-2-CON-SE-ZA-2500 |  | Excavation for GRP Pipe 200mm Diameter Section 1 | 21d | 2026-05-18 A | 2026-05-24 A | SDR-2-CON-ST-ZA-4030 FS+10d, SDR-2-CON-ST-ZA-6190 | 100% |  |
| SDR-2-CON-SE-ZA-1560 |  | Excavation for GRP Pipe 200mm Diameter Section 2 | 21d | 2026-05-24 A | 2026-06-15 A | SDR-2-CON-SE-ZA-2500 FS+4d, SDR-2-CON-RW-ZG-2250 | 100% |  |
|  | 5 | **bedding Works** |  | 2026-06-22 | 2026-06-30 |  |  |  |
| SDR-2-CON-SE-ZA-1620 |  | Sand bedding for GRP Pipe 200mm Diameter | 21d | 2026-06-22 A | 2026-06-30 A | SDR-2-CON-SE-ZA-1560 | 100% |  |
|  | 2 | **Pipes Laying** |  | 2026-07-21 | 2026-10-05 |  |  |  |
| SDR-2-CON-SE-ZA-1570 |  | 200 mm GRP Pipe Laying | 21d | 2026-07-21 A | 2026-10-05 | SDR-2-CON-SE-ZA-1560, SDR-2-CON-SE-ZA-1620 | 80% | 134d |
|  | 3 | **Testing** |  | 2026-08-16 | 2027-01-10 |  |  |  |
| SDR-2-CON-SE-ZA-1580 |  | Testing of 200 mm GRP Pipe. | 21d | 2026-08-16 A | 2027-01-10 | SDR-2-CON-ST-ZA-6160, SDR-2-CON-SE-ZA-1570 FF, SDR-2-CON-ST-ZA-4500 FF | 60% | 51d |
|  | 6 | **Backfilling** |  | 2027-01-11 | 2027-02-03 |  |  |  |
| SDR-2-CON-SE-ZA-1630 |  | Backfilling of 200 mm GRP Pipe. | 21d | 2027-01-11 | 2027-02-03 | SDR-2-CON-SE-ZA-1580 |  | 51d |
|  | 4 | **Manholes** |  | 2026-05-18 | 2027-03-31 |  |  |  |
|  | 1 | **Excavation** |  | 2026-05-18 | 2026-07-16 |  |  |  |
| SDR-2-CON-SE-ZA-2510 |  | Excavation for manhole. Section 1 | 21d | 2026-05-18 A | 2026-05-25 A | SDR-2-CON-SE-ZA-2500 | 100% |  |

| ID | WBS | Task | Duration | Start | Finish | Predecessors | Complete | Total float |
| --- | --- | --- | --- | --- | --- | --- | --- | --- |
| SDR-2-CON-SE-ZA-1590 |  | Excavation for manhole. Section 2 | 21d | 2026-07-09 A | 2026-07-16 A | SDR-2-CON-SE-ZA-2510 | 100% |  |
|  | 2 | **bedding Works** |  | 2026-07-16 | 2026-07-27 |  |  |  |
| SDR-2-CON-SE-ZA-1650 |  | Sand bedding for manhole. | 21d | 2026-07-16 A | 2026-07-27 A | SDR-2-CON-SE-ZA-1590 | 100% |  |
|  | 3 | **Install Manholes** |  | 2026-07-27 | 2027-01-10 |  |  |  |
| SDR-2-CON-SE-ZA-1600 |  | Manhole Installation | 21d | 2026-07-27 A | 2027-01-10 | SDR-2-CON-ST-ZA-6160, SDR-2-CON-SE-ZA-1590, SDR-2-CON-SE-ZA-1650, SDR-2-CON-ST-ZA-4500 FF | 80% | 51d |
|  | 4 | **Testing** |  | 2026-08-27 | 2027-01-11 |  |  |  |
| SDR-2-CON-SE-ZA-1610 |  | Testing | 21d | 2026-08-27 A | 2027-01-11 | SDR-2-CON-SE-ZA-1600 FF | 25% | 51d |
|  | 5 | **Backfilling** |  | 2027-03-03 | 2027-03-31 |  |  |  |
| SDR-2-CON-SE-ZA-2690 |  | Backfilling | 21d | 2027-03-03 | 2027-03-31 | SDR-2-CON-SE-ZA-1610, SDR-2-CON-ST-ZA-3350 |  | 8d |
|  | 6 | **LINE 6 AND LINE 7 ( PH2-A-MCE0 )** |  | 2026-06-08 | 2027-02-04 |  |  |  |
|  | 7 | **Pipes Work** |  | 2026-06-08 | 2027-02-04 |  |  |  |
|  | 1 | **Excavation** |  | 2026-06-08 | 2026-07-20 |  |  |  |
| SDR-2-CON-SE-ZA-2520 |  | Excavation for GRP Pipe 200mm Diameter Section 1 | 21d | 2026-06-08 A | 2026-06-15 A | SDR-2-CON-ST-ZA-4180 FS+6d | 100% |  |
| SDR-2-CON-SE-ZA-1660 |  | Excavation for GRP Pipe 200mm Diameter Section 2 | 21d | 2026-06-15 A | 2026-07-20 A | SDR-2-CON-SE-ZA-2520 FS+3d | 100% |  |
|  | 5 | **bedding Works** |  | 2026-07-20 | 2026-08-05 |  |  |  |
| SDR-2-CON-SE-ZA-1720 |  | Sand bedding for GRP Pipe 200mm Diameter | 21d | 2026-07-20 A | 2026-08-05 A | SDR-2-CON-SE-ZA-1660 | 100% |  |
|  | 2 | **Pipes Laying** |  | 2026-07-28 | 2026-12-24 |  |  |  |
| SDR-2-CON-SE-ZA-1670 |  | 200 mm GRP Pipe Laying | 21d | 2026-07-28 A | 2026-12-24 | SDR-2-CON-SE-ZA-1660, SDR-2-CON-SE-ZA-1720, SDR-2-CON-RW-ZA-2850 FF | 75% | 72d |
|  | 3 | **Testing** |  | 2026-08-16 | 2027-01-11 |  |  |  |
| SDR-2-CON-SE-ZA-1680 |  | Testing of 200 mm GRP Pipe. | 21d | 2026-08-16 A | 2027-01-11 | SDR-2-CON-SE-ZA-1670 FF, SDR-2-CON-ST-ZA-4580 FF | 60% | 57d |
|  | 6 | **Backfilling** |  | 2027-01-12 | 2027-02-04 |  |  |  |
| SDR-2-CON-SE-ZA-1730 |  | Backfilling of 200 mm GRP Pipe. | 21d | 2027-01-12 | 2027-02-04 | SDR-2-CON-SE-ZA-1680 |  | 57d |
|  | 4 | **Manholes** |  | 2026-06-14 | 2027-01-14 |  |  |  |
|  | 1 | **Excavation** |  | 2026-06-14 | 2026-07-01 |  |  |  |
| SDR-2-CON-SE-ZA-2530 |  | Excavation for manhole. Section 1 | 21d | 2026-06-14 A | 2026-06-22 A | SDR-2-CON-SE-ZA-2520 SS | 100% |  |
| SDR-2-CON-SE-ZA-1690 |  | Excavation for manhole.Section 2 | 21d | 2026-06-23 A | 2026-07-01 A | SDR-2-CON-SE-ZA-2530 | 100% |  |
|  | 2 | **bedding Works** |  | 2026-07-01 | 2026-07-13 |  |  |  |
| SDR-2-CON-SE-ZA-1750 |  | Sand bedding for manhole. | 21d | 2026-07-01 A | 2026-07-13 A | SDR-2-CON-SE-ZA-1690 | 100% |  |
|  | 3 | **Install Manholes** |  | 2026-07-15 | 2026-10-05 |  |  |  |
| SDR-2-CON-SE-ZA-1700 |  | Manhole Installation | 21d | 2026-07-15 A | 2026-10-05 | SDR-2-CON-SE-ZA-1690, SDR-2-CON-SE-ZA-1750 | 75% | 179d |
|  | 4 | **Testing** |  | 2026-08-27 | 2026-12-15 |  |  |  |
| SDR-2-CON-SE-ZA-1710 |  | Testing | 21d | 2026-08-27 A | 2026-12-15 | SDR-2-CON-ST-ZA-1300 FF, SDR-2-CON-RW-ZA-2370 FF | 30% | 75d |
|  | 5 | **Backfilling** |  | 2026-12-22 | 2027-01-14 |  |  |  |
| SDR-2-CON-SE-ZA-1740 |  | Backfilling | 21d | 2026-12-22 | 2027-01-14 | SDR-2-CON-SE-ZA-1710 FS+5d |  | 75d |
|  | 7 | **LINE 8 AND LINE 9 ( PH2-A-MCF0 )** |  | 2026-06-23 | 2026-11-05 |  |  |  |
|  | 7 | **Pipes Work** |  | 2026-06-23 | 2026-10-29 |  |  |  |
|  | 1 | **Excavation** |  | 2026-06-23 | 2026-07-13 |  |  |  |
| SDR-2-CON-SE-ZA-2540 |  | Excavation for GRP Pipe 200mm Diameter Section 1 | 21d | 2026-06-23 A | 2026-07-02 A | SDR-2-CON-ST-ZA-4330 | 100% |  |
| SDR-2-CON-SE-ZA-1760 |  | Excavation for GRP Pipe 200mm Diameter Section 2 | 21d | 2026-07-04 A | 2026-07-13 A | SDR-2-CON-SE-ZA-2540 FS+3d | 100% |  |
|  | 5 | **bedding Works** |  | 2026-07-14 | 2026-07-27 |  |  |  |
| SDR-2-CON-SE-ZA-1820 |  | Sand bedding for GRP Pipe 200mm Diameter | 21d | 2026-07-14 A | 2026-07-27 A | SDR-2-CON-SE-ZA-1760, SDR-2-CON-RW-ZG-1950 SS | 100% |  |
|  | 2 | **Pipes Laying** |  | 2026-07-27 | 2026-10-05 |  |  |  |
| SDR-2-CON-SE-ZA-1770 |  | 200 mm GRP Pipe Laying | 21d | 2026-07-27 A | 2026-10-05 | SDR-2-CON-SE-ZA-1760, SDR-2-CON-SE-ZA-1820, SDR-2-CON-RW-ZG-2500 FF | 75% | 134d |
|  | 3 | **Testing** |  | 2026-08-18 | 2026-10-05 |  |  |  |
| SDR-2-CON-SE-ZA-1780 |  | Testing of 200 mm GRP Pipe. | 21d | 2026-08-18 A | 2026-10-05 | SDR-2-CON-SE-ZA-1770 FF | 60% | 134d |
|  | 6 | **Backfilling** |  | 2026-10-06 | 2026-10-29 |  |  |  |
| SDR-2-CON-SE-ZA-1830 |  | Backfilling of 200 mm GRP Pipe. | 21d | 2026-10-06 | 2026-10-29 | SDR-2-CON-SE-ZA-1780 |  | 134d |
|  | 4 | **Manholes** |  | 2026-06-23 | 2026-11-05 |  |  |  |
|  | 1 | **Excavation** |  | 2026-06-23 | 2026-07-14 |  |  |  |
| SDR-2-CON-SE-ZA-2550 |  | Excavation for manhole. Section 1 | 21d | 2026-06-23 A | 2026-06-30 A | SDR-2-CON-SE-ZA-2540 SS | 100% |  |
| SDR-2-CON-SE-ZA-1790 |  | Excavation for manhole. Section 2 | 21d | 2026-07-01 A | 2026-07-14 A | SDR-2-CON-SE-ZA-2550 FS+3d | 100% |  |
|  | 2 | **bedding Works** |  | 2026-07-01 | 2026-07-20 |  |  |  |
| SDR-2-CON-SE-ZA-1850 |  | Sand bedding for manhole. | 21d | 2026-07-01 A | 2026-07-20 A | SDR-2-CON-SE-ZA-1790 | 100% |  |
|  | 3 | **Install Manholes** |  | 2026-07-08 | 2026-10-05 |  |  |  |
| SDR-2-CON-SE-ZA-1800 |  | Manhole Installation | 21d | 2026-07-08 A | 2026-10-05 | SDR-2-CON-SE-ZA-1790, SDR-2-CON-SE-ZA-1850 | 75% | 135d |
|  | 4 | **Testing** |  | 2026-08-27 | 2026-10-06 |  |  |  |
| SDR-2-CON-SE-ZA-1810 |  | Testing | 21d | 2026-08-27 A | 2026-10-06 | SDR-2-CON-SE-ZA-1800 FF | 30% | 135d |
|  | 5 | **Backfilling** |  | 2026-10-17 | 2026-11-05 |  |  |  |
| SDR-2-CON-SE-ZA-1840 |  | Backfilling | 18d | 2026-10-17 | 2026-11-05 | SDR-2-CON-SE-ZA-1810 FS+9d |  | 135d |
|  | 8 | **LINE 10 AND LINE 11 ( PH2-A-MCG0 )** |  | 2026-06-16 | 2027-01-28 |  |  |  |
|  | 7 | **Pipes Work** |  | 2026-06-28 | 2027-01-17 |  |  |  |
|  | 1 | **Excavation** |  | 2026-06-28 | 2026-07-13 |  |  |  |
| SDR-2-CON-SE-ZA-2560 |  | Excavation for GRP Pipe 200mm Diameter Section 1 | 21d | 2026-06-28 A | 2026-07-08 A | SDR-2-CON-ST-ZA-4480 FS+5d, SDR-2-CON-ST-ZA-6190 | 100% |  |
| SDR-2-CON-SE-ZA-1860 |  | Excavation for GRP Pipe 200mm Diameter Section 2 | 21d | 2026-07-01 A | 2026-07-13 A | SDR-2-CON-SE-ZA-2560 FS+3d | 100% |  |
|  | 5 | **bedding Works** |  | 2026-07-14 | 2026-07-27 |  |  |  |
| SDR-2-CON-SE-ZA-1920 |  | Sand bedding for GRP Pipe 200mm Diameter | 21d | 2026-07-14 A | 2026-07-27 A | SDR-2-CON-SE-ZA-1860, SDR-2-CON-RW-ZG-1950 SS | 100% |  |
|  | 2 | **Pipes Laying** |  | 2026-07-27 | 2026-10-05 |  |  |  |
| SDR-2-CON-SE-ZA-1870 |  | 200 mm GRP Pipe Laying | 21d | 2026-07-27 A | 2026-10-05 | SDR-2-CON-SE-ZA-1860, SDR-2-CON-SE-ZA-1920 | 75% | 124d |
|  | 3 | **Testing** |  | 2026-08-27 | 2026-12-24 |  |  |  |
| SDR-2-CON-SE-ZA-1880 |  | Testing of 200 mm GRP Pipe. | 21d | 2026-08-27 A | 2026-12-24 | SDR-2-CON-ST-ZA-6160, SDR-2-CON-RW-ZA-2740, SDR-2-CON-SE-ZA-1870 FF | 30% | 56d |

| ID | WBS | Task | Duration | Start | Finish | Predecessors | Complete | Total float |
| --- | --- | --- | --- | --- | --- | --- | --- | --- |
|  | 6 | **Backfilling** |  | 2026-12-24 | 2027-01-17 |  |  |  |
| SDR-2-CON-SE-ZA-1930 |  | Backfilling of 200 mm GRP Pipe. | 21d | 2026-12-24 | 2027-01-17 | SDR-2-CON-SE-ZA-1880 |  | 56d |
|  | 4 | **Manholes** |  | 2026-06-16 | 2027-01-28 |  |  |  |
|  | 1 | **Excavation** |  | 2026-06-16 | 2026-07-15 |  |  |  |
| SDR-2-CON-SE-ZA-2570 |  | Excavation for manhole. Section 1 | 21d | 2026-06-16 A | 2026-07-01 A | SDR-2-CON-SE-ZA-2560 SS | 100% |  |
| SDR-2-CON-SE-ZA-1890 |  | Excavation for manhole. Section 2 | 21d | 2026-07-01 A | 2026-07-15 A | SDR-2-CON-SE-ZA-2570 | 100% |  |
|  | 2 | **bedding Works** |  | 2026-07-14 | 2026-07-27 |  |  |  |
| SDR-2-CON-SE-ZA-1950 |  | Sand bedding for manhole. | 21d | 2026-07-14 A | 2026-07-27 A | SDR-2-CON-SE-ZA-1890 | 100% |  |
|  | 3 | **Install Manholes** |  | 2026-07-27 | 2026-10-05 |  |  |  |
| SDR-2-CON-SE-ZA-1900 |  | Manhole Installation | 21d | 2026-07-27 A | 2026-10-05 | SDR-2-CON-SE-ZA-1890, SDR-2-CON-SE-ZA-1950 | 75% | 179d |
|  | 4 | **Testing** |  | 2026-08-27 | 2026-12-24 |  |  |  |
| SDR-2-CON-SE-ZA-1910 |  | Testing | 21d | 2026-08-27 A | 2026-12-24 | SDR-2-CON-ST-ZA-6160 | 30% | 56d |
|  | 5 | **Backfilling** |  | 2027-01-05 | 2027-01-28 |  |  |  |
| SDR-2-CON-SE-ZA-1940 |  | Backfilling | 21d | 2027-01-05 | 2027-01-28 | SDR-2-CON-SE-ZA-1910 FS+10d |  | 56d |
|  | 9 | **LINE 12 AND LINE 13 ( PH2-A-MCH0 )** |  | 2026-06-22 | 2026-11-23 |  |  |  |
|  | 7 | **Pipes Work** |  | 2026-06-22 | 2026-11-23 |  |  |  |
|  | 1 | **Excavation** |  | 2026-06-22 | 2026-07-13 |  |  |  |
| SDR-2-CON-SE-ZA-2580 |  | Excavation for GRP Pipe 200mm Diameter Section 1 | 21d | 2026-06-22 A | 2026-06-30 A | SDR-2-CON-ST-ZA-4630 FS+10d | 100% |  |
| SDR-2-CON-SE-ZA-1960 |  | Excavation for GRP Pipe 200mm Diameter Section 2 | 21d | 2026-07-01 A | 2026-07-13 A | SDR-2-CON-SE-ZA-2580 FS+3d, SDR-2-CON-RW-ZA-1330 | 100% |  |
|  | 5 | **bedding Works** |  | 2026-07-14 | 2026-07-22 |  |  |  |
| SDR-2-CON-SE-ZA-2020 |  | Sand bedding for GRP Pipe 200mm Diameter | 21d | 2026-07-14 A | 2026-07-22 A | SDR-2-CON-RW-ZA-2990, SDR-2-CON-SE-ZA-1960 | 100% |  |
|  | 2 | **Pipes Laying** |  | 2026-07-25 | 2026-10-05 |  |  |  |
| SDR-2-CON-SE-ZA-1970 |  | 200 mm GRP Pipe Laying | 21d | 2026-07-25 A | 2026-10-05 | SDR-2-CON-RW-ZA-2950, SDR-2-CON-SE-ZA-1960, SDR-2-CON-SE-ZA-2020 | 70% | 114d |
|  | 3 | **Testing** |  | 2026-10-06 | 2026-10-29 |  |  |  |
| SDR-2-CON-SE-ZA-1980 |  | Testing of 200 mm GRP Pipe. | 21d | 2026-10-06 | 2026-10-29 | SDR-2-CON-RW-ZA-1200, SDR-2-CON-SE-ZA-1970 |  | 114d |
|  | 6 | **Backfilling** |  | 2026-10-31 | 2026-11-23 |  |  |  |
| SDR-2-CON-SE-ZA-2030 |  | Backfilling of 200 mm GRP Pipe. | 21d | 2026-10-31 | 2026-11-23 | SDR-2-CON-SE-ZA-1980 |  | 114d |
|  | 4 | **Manholes** |  | 2026-07-01 | 2026-11-17 |  |  |  |
|  | 1 | **Excavation** |  | 2026-07-01 | 2026-07-21 |  |  |  |
| SDR-2-CON-SE-ZA-2590 |  | Excavation for manhole. Section 1 | 21d | 2026-07-01 A | 2026-07-13 A | SDR-2-CON-SE-ZA-2580 | 100% |  |
| SDR-2-CON-SE-ZA-1990 |  | Excavation for manhole. Section 2 | 21d | 2026-07-14 A | 2026-07-21 A | SDR-2-CON-SE-ZA-2590 | 100% |  |
|  | 2 | **bedding Works** |  | 2026-07-14 | 2026-08-05 |  |  |  |
| SDR-2-CON-SE-ZA-2050 |  | Sand bedding for manhole. | 21d | 2026-07-14 A | 2026-08-05 A | SDR-2-CON-SE-ZA-1990 | 100% |  |
|  | 3 | **Install Manholes** |  | 2026-07-27 | 2026-10-05 |  |  |  |
| SDR-2-CON-SE-ZA-2000 |  | Manhole Installation | 21d | 2026-07-27 A | 2026-10-05 | SDR-2-CON-SE-ZA-1990, SDR-2-CON-SE-ZA-2050 | 70% | 125d |
|  | 4 | **Testing** |  | 2026-10-06 | 2026-10-29 |  |  |  |
| SDR-2-CON-SE-ZA-2010 |  | Testing | 21d | 2026-10-06 | 2026-10-29 | SDR-2-CON-SE-ZA-2000, SDR-2-CON-SE-ZA-2000 FF |  | 125d |
|  | 5 | **Backfilling** |  | 2026-10-31 | 2026-11-17 |  |  |  |
| SDR-2-CON-SE-ZA-2040 |  | Backfilling | 16d | 2026-10-31 | 2026-11-17 | SDR-2-CON-SE-ZA-2010 |  | 125d |
|  | ZG | **ZONE G** |  | 2026-05-18 | 2027-01-03 |  |  |  |
|  | 3 | **LINE 49 AND LINE 51 ( PH2-G-MCE0 )** |  | 2026-05-19 | 2026-10-14 |  |  |  |
|  | 7 | **Pipes Work** |  | 2026-06-01 | 2026-08-27 |  |  |  |
|  | 1 | **Excavation** |  | 2026-06-01 | 2026-06-15 |  |  |  |
| SDR-2-CON-SE-ZA-2600 |  | Excavation for GRP Pipe 200mm Diameter Section 1 | 21d | 2026-06-01 A | 2026-06-08 A | SDR-2-CON-ST-ZA-5380 | 100% |  |
| SDR-2-CON-SE-ZA-2060 |  | Excavation for GRP Pipe 200mm Diameter Section 2 | 21d | 2026-06-08 A | 2026-06-15 A | SDR-2-CON-SE-ZA-2600 | 100% |  |
|  | 5 | **bedding Works** |  | 2026-06-15 | 2026-06-25 |  |  |  |
| SDR-2-CON-SE-ZA-2120 |  | Sand bedding for GRP Pipe 200mm Diameter | 21d | 2026-06-15 A | 2026-06-25 A | SDR-2-CON-SE-ZA-2060 | 100% |  |
|  | 2 | **Pipes Laying** |  | 2026-06-22 | 2026-07-06 |  |  |  |
| SDR-2-CON-SE-ZA-2070 |  | 200 mm GRP Pipe Laying | 21d | 2026-06-22 A | 2026-07-06 A | SDR-2-CON-RW-ZA-1340, SDR-2-CON-SE-ZA-2060, SDR-2-CON-SE-ZA-2120 | 100% |  |
|  | 3 | **Testing** |  | 2026-07-07 | 2026-08-05 |  |  |  |
| SDR-2-CON-SE-ZA-2080 |  | Testing of 200 mm GRP Pipe. | 21d | 2026-07-07 A | 2026-08-05 A | SDR-2-CON-SE-ZA-2070 | 100% |  |
|  | 6 | **Backfilling** |  | 2026-08-12 | 2026-08-27 |  |  |  |
| SDR-2-CON-SE-ZA-2130 |  | Backfilling of 200 mm GRP Pipe. | 21d | 2026-08-12 A | 2026-08-27 A | SDR-2-CON-SE-ZA-2080 | 100% |  |
|  | 4 | **Manholes** |  | 2026-05-19 | 2026-10-14 |  |  |  |
|  | 1 | **Excavation** |  | 2026-05-19 | 2026-06-06 |  |  |  |
| SDR-2-CON-SE-ZA-2610 |  | Excavation for manhole. Section 1 | 21d | 2026-05-19 A | 2026-06-01 A | SDR-2-CON-SE-ZA-2600 SS | 100% |  |
| SDR-2-CON-SE-ZA-2090 |  | Excavation for manhole. Section 2 | 21d | 2026-05-31 A | 2026-06-06 A | SDR-2-CON-SE-ZA-2610 FS+3d | 100% |  |
|  | 2 | **bedding Works** |  | 2026-06-01 | 2026-06-11 |  |  |  |
| SDR-2-CON-SE-ZA-2150 |  | Sand bedding for manhole. | 21d | 2026-06-01 A | 2026-06-11 A | SDR-2-CON-SE-ZA-2090 | 100% |  |
|  | 3 | **Install Manholes** |  | 2026-05-31 | 2026-08-31 |  |  |  |
| SDR-2-CON-SE-ZA-2100 |  | Manhole Installation | 21d | 2026-05-31 A | 2026-08-31 A | SDR-2-CON-SE-ZA-2090, SDR-2-CON-SE-ZA-2150 | 100% |  |
|  | 4 | **Testing** |  | 2026-09-07 | 2026-10-14 |  |  |  |
| SDR-2-CON-SE-ZA-2110 |  | Testing | 21d | 2026-09-07 A | 2026-10-14 | SDR-2-CON-SE-ZA-2100, SDR-2-CON-SE-ZA-2100 FF | 10% | 153d |
|  | 5 | **Backfilling** |  | 2026-08-20 | 2026-08-31 |  |  |  |
| SDR-2-CON-SE-ZA-2140 |  | Backfilling | 21d | 2026-08-20 A | 2026-08-31 A | SDR-2-CON-SE-ZA-2110 SS | 100% |  |
|  | 4 | **LINE 50 ( PH2-G-MCD0 )** |  | 2026-05-23 | 2027-01-03 |  |  |  |
|  | 7 | **Pipes Work** |  | 2026-06-01 | 2027-01-03 |  |  |  |
|  | 1 | **Excavation** |  | 2026-06-01 | 2026-06-15 |  |  |  |
| SDR-2-CON-SE-ZA-2620 |  | Excavation for GRP Pipe 200mm Diameter Section 1 | 21d | 2026-06-01 A | 2026-06-08 A | SDR-2-CON-ST-ZA-5380 FS+5d | 100% |  |
| SDR-2-CON-SE-ZA-2160 |  | Excavation for GRP Pipe 200mm Diameter Section 2 | 21d | 2026-06-08 A | 2026-06-15 A | SDR-2-CON-SE-ZA-2620 FS+3d | 100% |  |

| ID | WBS | Task | Duration | Start | Finish | Predecessors | Complete | Total float |
| --- | --- | --- | --- | --- | --- | --- | --- | --- |
|  | 5 | **bedding Works** |  | 2026-06-15 | 2026-07-16 |  |  |  |
| SDR-2-CON-SE-ZA-2220 |  | Sand bedding for GRP Pipe 200mm Diameter | 21d | 2026-06-15 A | 2026-07-16 A | SDR-2-CON-SE-ZA-2160 | 100% |  |
|  | 2 | **Pipes Laying** |  | 2026-06-22 | 2026-07-20 |  |  |  |
| SDR-2-CON-SE-ZA-2170 |  | 200 mm GRP Pipe Laying | 21d | 2026-06-22 A | 2026-07-20 A | SDR-2-CON-ST-ZA-6160, SDR-2-CON-SE-ZA-2160, SDR-2-CON-SE-ZA-2220 | 100% |  |
|  | 3 | **Testing** |  | 2026-09-07 | 2027-01-03 |  |  |  |
| SDR-2-CON-SE-ZA-2180 |  | Testing of 200 mm GRP Pipe. | 21d | 2026-09-07 A | 2027-01-03 | SDR-2-CON-SE-ZA-2170 | 10% | 84d |
|  | 6 | **Backfilling** |  | 2026-08-20 | 2026-08-31 |  |  |  |
| SDR-2-CON-SE-ZA-2230 |  | Backfilling of 200 mm GRP Pipe. | 21d | 2026-08-20 A | 2026-08-31 A | SDR-2-CON-SE-ZA-2180 SS | 100% |  |
|  | 4 | **Manholes** |  | 2026-05-23 | 2026-10-14 |  |  |  |
|  | 1 | **Excavation** |  | 2026-05-23 | 2026-06-06 |  |  |  |
| SDR-2-CON-SE-ZA-2630 |  | Excavation for manhole. Section 1 | 21d | 2026-05-23 A | 2026-06-03 A | SDR-2-CON-SE-ZA-2620 SS | 100% |  |
| SDR-2-CON-SE-ZA-2190 |  | Excavation for manhole. Section 2 | 21d | 2026-06-01 A | 2026-06-06 A | SDR-2-CON-SE-ZA-2630 FS+3d | 100% |  |
|  | 2 | **bedding Works** |  | 2026-06-01 | 2026-06-08 |  |  |  |
| SDR-2-CON-SE-ZA-2250 |  | Sand bedding for manhole. | 21d | 2026-06-01 A | 2026-06-08 A | SDR-2-CON-SE-ZA-2190 | 100% |  |
|  | 3 | **Install Manholes** |  | 2026-06-15 | 2026-06-27 |  |  |  |
| SDR-2-CON-SE-ZA-2200 |  | Manhole Installation | 21d | 2026-06-15 A | 2026-06-27 A | SDR-2-CON-SE-ZA-2190, SDR-2-CON-SE-ZA-2250 | 100% |  |
|  | 4 | **Testing** |  | 2026-09-07 | 2026-10-14 |  |  |  |
| SDR-2-CON-SE-ZA-2210 |  | Testing | 21d | 2026-09-07 A | 2026-10-14 | SDR-2-CON-SE-ZA-2200, SDR-2-CON-SE-ZA-2200 FF | 10% | 147d |
|  | 5 | **Backfilling** |  | 2026-08-20 | 2026-08-31 |  |  |  |
| SDR-2-CON-SE-ZA-2240 |  | Backfilling | 17d | 2026-08-20 A | 2026-08-31 A | SDR-2-CON-SE-ZA-2210 SS | 100% |  |
|  | 5 | **LINE 52 AND LINE 53 ( PH2-G-MCF0 )** |  | 2026-05-21 | 2026-10-14 |  |  |  |
|  | 7 | **Pipes Work** |  | 2026-05-21 | 2026-08-31 |  |  |  |
|  | 1 | **Excavation** |  | 2026-05-21 | 2026-06-06 |  |  |  |
| SDR-2-CON-SE-ZA-2640 |  | Excavation for GRP Pipe 200mm Diameter Section 1 | 21d | 2026-05-21 A | 2026-06-01 A | SDR-2-CON-ST-ZA-5530 | 100% |  |
| SDR-2-CON-SE-ZA-2260 |  | Excavation for GRP Pipe 200mm Diameter Section 2 | 21d | 2026-06-01 A | 2026-06-06 A | SDR-2-CON-SE-ZA-2640 FS+3d | 100% |  |
|  | 5 | **bedding Works** |  | 2026-05-21 | 2026-06-08 |  |  |  |
| SDR-2-CON-SE-ZA-2320 |  | Sand bedding for GRP Pipe 200mm Diameter | 21d | 2026-05-21 A | 2026-06-08 A | SDR-2-CON-SE-ZA-2260 | 100% |  |
|  | 2 | **Pipes Laying** |  | 2026-06-09 | 2026-07-01 |  |  |  |
| SDR-2-CON-SE-ZA-2270 |  | 200 mm GRP Pipe Laying | 21d | 2026-06-09 A | 2026-07-01 A | SDR-2-CON-SE-ZA-2260, SDR-2-CON-SE-ZA-2320 | 100% |  |
|  | 3 | **Testing** |  | 2026-08-20 | 2026-08-27 |  |  |  |
| SDR-2-CON-SE-ZA-2280 |  | Testing of 200 mm GRP Pipe. | 21d | 2026-08-20 A | 2026-08-27 A | SDR-2-CON-SE-ZA-2270 | 100% |  |
|  | 6 | **Backfilling** |  | 2026-08-26 | 2026-08-31 |  |  |  |
| SDR-2-CON-SE-ZA-2330 |  | Backfilling of 200 mm GRP Pipe. | 21d | 2026-08-26 A | 2026-08-31 A | SDR-2-CON-SE-ZA-2280 | 100% |  |
|  | 4 | **Manholes** |  | 2026-05-23 | 2026-10-14 |  |  |  |
|  | 1 | **Excavation** |  | 2026-05-23 | 2026-06-06 |  |  |  |
| SDR-2-CON-SE-ZA-2650 |  | Excavation for manhole. Section 1 | 21d | 2026-05-23 A | 2026-06-03 A | SDR-2-CON-SE-ZA-2640 SS | 100% |  |
| SDR-2-CON-SE-ZA-2290 |  | Excavation for manhole. Section 2 | 21d | 2026-06-01 A | 2026-06-06 A | SDR-2-CON-SE-ZA-2650 FS+3d | 100% |  |
|  | 2 | **bedding Works** |  | 2026-05-30 | 2026-06-08 |  |  |  |
| SDR-2-CON-SE-ZA-2350 |  | Sand bedding for manhole. | 21d | 2026-05-30 A | 2026-06-08 A | SDR-2-CON-SE-ZA-2290 | 100% |  |
|  | 3 | **Install Manholes** |  | 2026-06-11 | 2026-06-22 |  |  |  |
| SDR-2-CON-SE-ZA-2300 |  | Manhole Installation | 21d | 2026-06-11 A | 2026-06-22 A | SDR-2-CON-SE-ZA-2290, SDR-2-CON-SE-ZA-2350 | 100% |  |
|  | 4 | **Testing** |  | 2026-09-07 | 2026-10-14 |  |  |  |
| SDR-2-CON-SE-ZA-2310 |  | Testing | 21d | 2026-09-07 A | 2026-10-14 | SDR-2-CON-SE-ZA-2300, SDR-2-CON-SE-ZA-2300 FF | 10% | 146d |
|  | 5 | **Backfilling** |  | 2026-08-20 | 2026-08-31 |  |  |  |
| SDR-2-CON-SE-ZA-2340 |  | Backfilling | 21d | 2026-08-20 A | 2026-08-31 A | SDR-2-CON-SE-ZA-2310 SS | 100% |  |
|  | 6 | **LINE 54 AND LINE 55 ( PH2-G-MCG0 )** |  | 2026-05-18 | 2026-10-14 |  |  |  |
|  | 7 | **Pipes Work** |  | 2026-06-08 | 2026-08-31 |  |  |  |
|  | 1 | **Excavation** |  | 2026-06-08 | 2026-06-29 |  |  |  |
| SDR-2-CON-SE-ZA-2660 |  | Excavation for GRP Pipe 200mm Diameter Section 1 | 21d | 2026-06-08 A | 2026-06-21 A | SDR-2-CON-ST-ZA-5980 | 100% |  |
| SDR-2-CON-SE-ZA-2360 |  | Excavation for GRP Pipe 200mm Diameter Section 2 | 21d | 2026-06-22 A | 2026-06-29 A | SDR-2-CON-SE-ZA-2660 FS+3d | 100% |  |
|  | 5 | **bedding Works** |  | 2026-06-26 | 2026-07-01 |  |  |  |
| SDR-2-CON-SE-ZA-2420 |  | Sand bedding for GRP Pipe 200mm Diameter | 21d | 2026-06-26 A | 2026-07-01 A | SDR-2-CON-SE-ZA-2360 | 100% |  |
|  | 2 | **Pipes Laying** |  | 2026-06-25 | 2026-07-04 |  |  |  |
| SDR-2-CON-SE-ZA-2370 |  | 200 mm GRP Pipe Laying | 21d | 2026-06-25 A | 2026-07-04 A | SDR-2-CON-RW-ZG-1360, SDR-2-CON-SE-ZA-2360, SDR-2-CON-SE-ZA-2420 | 100% |  |
|  | 3 | **Testing** |  | 2026-08-13 | 2026-08-20 |  |  |  |
| SDR-2-CON-SE-ZA-2380 |  | Testing of 200 mm GRP Pipe. | 21d | 2026-08-13 A | 2026-08-20 A | SDR-2-CON-SE-ZA-2370, SDR-2-CON-RW-ZG-1060 SS | 100% |  |
|  | 6 | **Backfilling** |  | 2026-08-20 | 2026-08-31 |  |  |  |
| SDR-2-CON-SE-ZA-2430 |  | Backfilling of 200 mm GRP Pipe. | 21d | 2026-08-20 A | 2026-08-31 A | SDR-2-CON-SE-ZA-2380 | 100% |  |
|  | 4 | **Manholes** |  | 2026-05-18 | 2026-10-14 |  |  |  |
|  | 1 | **Excavation** |  | 2026-05-18 | 2026-06-06 |  |  |  |
| SDR-2-CON-SE-ZA-2670 |  | Excavation for manhole. Section 1 | 21d | 2026-05-18 A | 2026-05-31 A | SDR-2-CON-SE-ZA-2660 SS | 100% |  |
| SDR-2-CON-SE-ZA-2390 |  | Excavation for manhole. Section 2 | 21d | 2026-06-01 A | 2026-06-06 A | SDR-2-CON-SE-ZA-2670 FS+3d, SDR-2-CON-RW-ZG-1200 | 100% |  |
|  | 2 | **bedding Works** |  | 2026-06-06 | 2026-06-14 |  |  |  |
| SDR-2-CON-SE-ZA-2450 |  | Sand bedding for manhole. | 21d | 2026-06-06 A | 2026-06-14 A | SDR-2-CON-SE-ZA-2390 | 100% |  |
|  | 3 | **Install Manholes** |  | 2026-06-27 | 2026-07-05 |  |  |  |
| SDR-2-CON-SE-ZA-2400 |  | Manhole Installation | 21d | 2026-06-27 A | 2026-07-05 A | SDR-2-CON-SE-ZA-2390, SDR-2-CON-SE-ZA-2450 | 100% |  |
|  | 4 | **Testing** |  | 2026-09-07 | 2026-10-14 |  |  |  |
| SDR-2-CON-SE-ZA-2410 |  | Testing | 21d | 2026-09-07 A | 2026-10-14 | SDR-2-CON-SE-ZA-2400, SDR-2-CON-SE-ZA-2400 FF | 10% | 159d |
|  | 5 | **Backfilling** |  | 2026-08-20 | 2026-08-31 |  |  |  |
| SDR-2-CON-SE-ZA-2440 |  | Backfilling | 21d | 2026-08-20 A | 2026-08-31 A | SDR-2-CON-SE-ZA-2410 SS | 100% |  |

| ID | WBS | Task | Duration | Start | Finish | Predecessors | Complete | Total float |
| --- | --- | --- | --- | --- | --- | --- | --- | --- |
|  | TSE | **TSE Network** |  | 2026-08-06 | 2027-05-12 |  |  |  |
|  | ZA | **ZONE A** |  | 2026-08-06 | 2027-05-12 |  |  |  |
|  | 1 | **TSE NETWORK IN ( PH2-COL-MC10 )** |  | 2026-08-09 | 2027-04-12 |  |  |  |
|  | 6 | **Pipes Work** |  | 2026-08-09 | 2027-04-12 |  |  |  |
|  | 1 | **Excavation** |  | 2026-08-09 | 2026-12-13 |  |  |  |
| SDR-2-CON-TS-ZA-1000 |  | Excavation for TSE HDPE Pipes 225 mm Section 2 | 20d | 2026-08-09 A | 2026-12-13 | SDR-2-CON-RW-ZG-2300, SDR-2-CON-TS-ZA-3200 FF, SDR-2-CON-CC-ZG-1650 FF, SDR-2-CON-RW-ZG-1110 FF |  | 8d |
| SDR-2-CON-TS-ZA-3200 |  | Excavation for TSE HDPE Pipes 225 mm Section 1 | 20d | 2026-08-09 A | 2026-11-08 | SDR-2-CON-SE-ZA-1000, SDR-2-PRO-ST-M-1010, SDR-2-PRO-ST-E-1060, SDR-2-CON-RW-ZG-1390 FF, SDR-2-CON-RW-ZA-2350 FF | 65% | 34d |
|  | 6 | **bedding Works** |  | 2026-12-14 | 2027-01-06 |  |  |  |
| SDR-2-CON-TS-ZA-1900 |  | Sand bedding for TSE HDPE Pipes 225 mm | 21d | 2026-12-14 | 2027-01-06 | SDR-2-CON-RW-ZG-1210 FS+4d, SDR-2-CON-TS-ZA-1000 |  | 43d |
|  | 2 | **Pipes Laying** |  | 2027-02-01 | 2027-02-25 |  |  |  |
| SDR-2-CON-TS-ZA-1010 |  | Install TSE 225 mm HDPE Pipe | 21d | 2027-02-01 | 2027-02-25 | SDR-2-CON-ST-ZA-4200, SDR-2-CON-CC-ZA-1820 SS, SDR-2-CON-TS-ZA-1000, SDR-2-PRO-MAL-M-1010, SDR-2-CON-TS-ZA-1900 |  | 22d |
|  | 5 | **Testing** |  | 2027-02-27 | 2027-03-18 |  |  |  |
| SDR-2-CON-TS-ZA-1080 |  | Testing of TSE HDPE Pipe 225 mm. | 14d | 2027-02-27 | 2027-03-18 | SDR-2-CON-CC-ZG-1620, SDR-2-CON-TS-ZA-1010 |  | 22d |
|  | 7 | **Backfilling** |  | 2027-03-20 | 2027-04-12 |  |  |  |
| SDR-2-CON-TS-ZA-1910 |  | Backfilling of TSE HDPE Pipe 225 mm. | 21d | 2027-03-20 | 2027-04-12 | SDR-2-CON-TS-ZA-1080 |  | 22d |
|  | 3 | **Valve Chambers & Valves** |  | 2026-11-16 | 2027-04-06 |  |  |  |
|  | 3 | **Excavation** |  | 2026-11-16 | 2026-12-31 |  |  |  |
| SDR-2-CON-TS-ZA-3210 |  | Excavation for Valve Chambers Section 1 | 20d | 2026-11-16 | 2026-12-08 | SDR-2-CON-TS-ZA-3200 SS, SDR-2-CON-RW-ZA-3490, SDR-2-CON-RW-ZA-2350 |  | 27d |
| SDR-2-CON-TS-ZA-1040 |  | Excavation for Valve Chambers Section 2 | 20d | 2026-12-09 | 2026-12-31 | SDR-2-CON-TS-ZA-3210 |  | 27d |
|  | 1 | **bedding Works** |  | 2027-01-02 | 2027-01-25 |  |  |  |
| SDR-2-CON-TS-ZA-1020 |  | Sand bedding for Valve Chambers | 21d | 2027-01-02 | 2027-01-25 | SDR-2-CON-RW-ZG-1060, SDR-2-PRO-MAL-M-1020, SDR-2-CON-TS-ZA-1040 |  | 27d |
|  | 4 | **Install Chambers & Valves** |  | 2027-01-26 | 2027-02-18 |  |  |  |
| SDR-2-CON-TS-ZA-1050 |  | Valve Chambers & Valves Installation | 21d | 2027-01-26 | 2027-02-18 | SDR-2-CON-TS-ZA-1040, SDR-2-CON-TS-ZA-1020 |  | 27d |
|  | 5 | **Testing** |  | 2027-02-20 | 2027-03-08 |  |  |  |
| SDR-2-CON-TS-ZA-1060 |  | Testing Chambers & Valves Installation | 14d | 2027-02-20 | 2027-03-08 | SDR-2-MILS-1060, SDR-2-CON-TS-ZA-1050 |  | 27d |
|  | 6 | **Backfilling** |  | 2027-03-14 | 2027-04-06 |  |  |  |
| SDR-2-CON-TS-ZA-1070 |  | Backfilling Chambers & Valves Installation | 21d | 2027-03-14 | 2027-04-06 | SDR-2-CON-TS-ZA-1060 |  | 27d |
|  | 2 | **TSE NETWORK IN ( PH2-COL-MC20 )** |  | 2026-10-01 | 2027-04-08 |  |  |  |
|  | 6 | **Pipes Work** |  | 2026-10-01 | 2027-04-04 |  |  |  |
|  | 1 | **Excavation** |  | 2026-10-01 | 2027-01-06 |  |  |  |
| SDR-2-CON-TS-ZA-3220 |  | Excavation for TSE HDPE Pipes 225 mm Section 1 | 20d | 2026-10-01 A | 2026-12-14 | SDR-2-CON-SE-ZA-1460, SDR-2-CON-CC-ZG-1610, SDR-2-CON-RW-ZA-3490 | 25% | 29d |
| SDR-2-CON-TS-ZA-2200 |  | Excavation for TSE HDPE Pipes 225 mm Section 2 | 20d | 2026-12-15 | 2027-01-06 | SDR-2-CON-TS-ZA-3220 |  | 29d |
|  | 6 | **bedding Works** |  | 2027-01-07 | 2027-01-31 |  |  |  |
| SDR-2-CON-TS-ZA-2280 |  | Sand bedding for TSE HDPE Pipes 225 mm | 21d | 2027-01-07 | 2027-01-31 | SDR-2-CON-RW-ZA-2370, SDR-2-CON-TS-ZA-2200 |  | 29d |
|  | 2 | **Pipes Laying** |  | 2026-10-03 | 2027-02-25 |  |  |  |
| SDR-2-CON-TS-ZA-2210 |  | Install TSE 225 mm HDPE Pipe | 21d | 2026-10-03 A | 2027-02-25 | SDR-2-CON-TS-ZA-2200, SDR-2-CON-TS-ZA-2280 | 15% | 29d |
|  | 5 | **Testing** |  | 2027-02-27 | 2027-03-14 |  |  |  |
| SDR-2-CON-TS-ZA-2270 |  | Testing of TSE HDPE Pipe 225 mm. | 10d | 2027-02-27 | 2027-03-14 | SDR-2-CON-TS-ZA-2210 |  | 29d |
|  | 7 | **Backfilling** |  | 2027-03-15 | 2027-04-04 |  |  |  |
| SDR-2-CON-TS-ZA-2290 |  | Backfilling of TSE HDPE Pipe 225 mm. | 18d | 2027-03-15 | 2027-04-04 | SDR-2-CON-TS-ZA-2270 |  | 29d |
|  | 3 | **Valve Chambers & Valves** |  | 2026-11-22 | 2027-04-08 |  |  |  |
|  | 3 | **Excavation** |  | 2026-11-22 | 2027-01-06 |  |  |  |
| SDR-2-CON-TS-ZA-3230 |  | Excavation for Valve Chambers Section 1 | 20d | 2026-11-22 | 2026-12-14 | SDR-2-CON-TS-ZA-3220 SS, SDR-2-CON-RW-ZA-3490 |  | 29d |
| SDR-2-CON-TS-ZA-2230 |  | Excavation for Valve Chambers Section 2 | 20d | 2026-12-15 | 2027-01-06 | SDR-2-CON-TS-ZA-3230 |  | 29d |
|  | 1 | **bedding Works** |  | 2027-01-12 | 2027-02-04 |  |  |  |
| SDR-2-CON-TS-ZA-2220 |  | Sand bedding for Valve Chambers | 21d | 2027-01-12 | 2027-02-04 | SDR-2-CON-ST-ZA-6000, SDR-2-CON-ST-ZA-5850, SDR-2-CON-TS-ZA-2230 |  | 25d |
|  | 4 | **Install Chambers & Valves** |  | 2027-02-06 | 2027-03-02 |  |  |  |
| SDR-2-CON-TS-ZA-2240 |  | Valve Chambers & Valves Installation | 21d | 2027-02-06 | 2027-03-02 | SDR-2-CON-TS-ZA-2230, SDR-2-CON-TS-ZA-2220 |  | 25d |
|  | 5 | **Testing** |  | 2027-03-03 | 2027-03-18 |  |  |  |
| SDR-2-CON-TS-ZA-2250 |  | Testing Chambers & Valves Installation | 10d | 2027-03-03 | 2027-03-18 | SDR-2-CON-TS-ZA-2240 |  | 25d |
|  | 6 | **Backfilling** |  | 2027-03-20 | 2027-04-08 |  |  |  |
| SDR-2-CON-TS-ZA-2260 |  | Backfilling Chambers & Valves Installation | 18d | 2027-03-20 | 2027-04-08 | SDR-2-CON-TS-ZA-2250 |  | 25d |
|  | 3 | **TSE NETWORK IN ( PH2-A-MCC0 )** |  | 2026-09-24 | 2027-04-13 |  |  |  |
|  | 6 | **Pipes Work** |  | 2026-09-24 | 2027-02-16 |  |  |  |
|  | 1 | **Excavation** |  | 2026-09-24 | 2026-12-02 |  |  |  |
| SDR-2-CON-TS-ZA-3240 |  | Excavation for TSE HDPE Pipes 125 mm Section 1 | 21d | 2026-09-24 A | 2026-10-01 A | SDR-2-CON-SE-ZA-1460 FS+1d | 100% |  |
| SDR-2-CON-TS-ZA-1180 |  | Excavation for TSE HDPE Pipes 125 mm Section 2 | 21d | 2026-11-09 | 2026-12-02 | SDR-2-CON-TS-ZA-3240 FS+3d, SDR-2-CON-RW-ZG-1060 |  | 64d |
|  | 3 | **bedding Works** |  | 2026-12-03 | 2026-12-27 |  |  |  |
| SDR-2-CON-TS-ZA-1920 |  | Sand bedding for TSE HDPE Pipes 125 mm | 21d | 2026-12-03 | 2026-12-27 | SDR-2-CON-TS-ZA-1180 |  | 64d |
|  | 2 | **Pipes Laying** |  | 2026-12-28 | 2027-01-20 |  |  |  |
| SDR-2-CON-TS-ZA-1190 |  | Install TSE 125 mm HDPE Pipe | 21d | 2026-12-28 | 2027-01-20 | SDR-2-CON-TS-ZA-1180, SDR-2-CON-TS-ZA-1920 |  | 64d |
|  | 5 | **Testing** |  | 2027-01-21 | 2027-02-01 |  |  |  |
| SDR-2-CON-TS-ZA-1260 |  | Testing of TSE HDPE Pipe 125 mm. | 10d | 2027-01-21 | 2027-02-01 | SDR-2-CON-TS-ZA-1190 |  | 64d |
|  | 4 | **Backfilling** |  | 2027-02-02 | 2027-02-16 |  |  |  |
| SDR-2-CON-TS-ZA-1930 |  | Backfilling of TSE HDPE Pipe 125 mm. | 13d | 2027-02-02 | 2027-02-16 | SDR-2-CON-TS-ZA-1260 |  | 64d |
|  | 3 | **Valve Chambers & Valves** |  | 2026-10-05 | 2027-04-13 |  |  |  |
|  | 3 | **Excavation** |  | 2026-10-05 | 2026-11-18 |  |  |  |
| SDR-2-CON-TS-ZA-3250 |  | Excavation for Valve Chambers Section 1 | 21d | 2026-10-05 | 2026-10-28 | SDR-2-CON-TS-ZA-3240 SS |  | 70.3d |
| SDR-2-CON-TS-ZA-2010 |  | Excavation for Valve Chambers Section 2 | 18d | 2026-10-29 | 2026-11-18 | SDR-2-CON-TS-ZA-3250 |  | 70.3d |
|  | 1 | **bedding Works** |  | 2026-11-19 | 2026-12-13 |  |  |  |

| ID | WBS | Task | Duration | Start | Finish | Predecessors | Complete | Total float |
| --- | --- | --- | --- | --- | --- | --- | --- | --- |
| SDR-2-CON-TS-ZA-2000 |  | Sand bedding for Valve Chambers | 21d | 2026-11-19 | 2026-12-13 | SDR-2-CON-TS-ZA-2010 |  | 70.3d |
|  | 4 | **Install Chambers & Valves** |  | 2027-02-09 | 2027-03-06 |  |  |  |
| SDR-2-CON-TS-ZA-2020 |  | Valve Chambers & Valves Installation | 21d | 2027-02-09 | 2027-03-06 | SDR-2-TC-CCTV-1080, SDR-2-CON-TS-ZA-2010, SDR-2-CON-TS-ZA-2000 |  | 21.3d |
|  | 5 | **Testing** |  | 2027-03-07 | 2027-03-18 |  |  |  |
| SDR-2-CON-TS-ZA-2030 |  | Testing Chambers & Valves Installation | 7d | 2027-03-07 | 2027-03-18 | SDR-2-CON-TS-ZA-2020 |  | 21.3d |
|  | 6 | **Backfilling** |  | 2027-03-20 | 2027-04-13 |  |  |  |
| SDR-2-CON-TS-ZA-2040 |  | Backfilling Chambers & Valves Installation | 21d | 2027-03-20 | 2027-04-13 | SDR-2-CON-TS-ZA-2030 FS+0.7d |  | 21.3d |
|  | 4 | **TSE NETWORK IN ( PH2-A-MCD0 )** |  | 2026-09-07 | 2027-04-18 |  |  |  |
|  | 6 | **Pipes Work** |  | 2026-09-07 | 2027-04-17 |  |  |  |
|  | 1 | **Excavation** |  | 2026-09-07 | 2026-10-26 |  |  |  |
| SDR-2-CON-TS-ZA-3260 |  | Excavation for TSE HDPE Pipes 90 mm Section 1 | 20d | 2026-09-07 A | 2026-09-14 A | SDR-2-CON-SE-ZA-1560 | 100% |  |
| SDR-2-CON-TS-ZA-1270 |  | Excavation for TSE HDPE Pipes 90 mm Section 2 | 19d | 2026-09-24 A | 2026-10-26 | SDR-2-CON-TS-ZA-3260 | 25% | 90d |
|  | 3 | **bedding Works** |  | 2026-09-24 | 2026-11-16 |  |  |  |
| SDR-2-CON-TS-ZA-1940 |  | Sand bedding for TSE HDPE Pipes 90 mm | 18d | 2026-09-24 A | 2026-11-16 | SDR-2-CON-TS-ZA-1270 | 25% | 90d |
|  | 2 | **Pipes Laying** |  | 2026-09-24 | 2027-03-06 |  |  |  |
| SDR-2-CON-TS-ZA-1280 |  | Install TSE 90 mm HDPE Pipe | 21d | 2026-09-24 A | 2027-03-06 | SDR-2-TC-CCTV-1080, SDR-2-CON-TS-ZA-1940 | 30% | 18d |
|  | 5 | **Testing** |  | 2027-03-07 | 2027-03-23 |  |  |  |
| SDR-2-CON-TS-ZA-1350 |  | Testing of TSE HDPE Pipe 90 mm. | 11d | 2027-03-07 | 2027-03-23 | SDR-2-CON-SE-ZA-2430, SDR-2-CON-SE-ZA-2340, SDR-2-CON-SE-ZA-2330, SDR-2-CON-SE-ZA-2240 SS, SDR-2-CON-TS-ZA-1280 |  | 18d |
|  | 4 | **Backfilling** |  | 2027-03-24 | 2027-04-17 |  |  |  |
| SDR-2-CON-TS-ZA-1950 |  | Backfilling of TSE HDPE Pipe 90 mm. | 21d | 2027-03-24 | 2027-04-17 | SDR-2-CON-TS-ZA-1350 |  | 18d |
|  | 3 | **Valve Chambers & Valves** |  | 2026-10-05 | 2027-04-18 |  |  |  |
|  | 3 | **Excavation** |  | 2026-10-05 | 2026-11-18 |  |  |  |
| SDR-2-CON-TS-ZA-3270 |  | Excavation for Valve Chambers Section 1 | 20d | 2026-10-05 | 2026-10-27 | SDR-2-CON-TS-ZA-3260 SS |  | 71d |
| SDR-2-CON-TS-ZA-2060 |  | Excavation for Valve Chambers Section 2 | 19d | 2026-10-28 | 2026-11-18 | SDR-2-CON-TS-ZA-3270 |  | 71d |
|  | 1 | **bedding Works** |  | 2026-11-19 | 2026-12-07 |  |  |  |
| SDR-2-CON-TS-ZA-2050 |  | Sand bedding for Valve Chambers | 16d | 2026-11-19 | 2026-12-07 | SDR-2-CON-TS-ZA-2060 |  | 71d |
|  | 4 | **Install Chambers & Valves** |  | 2027-02-09 | 2027-03-06 |  |  |  |
| SDR-2-CON-TS-ZA-2070 |  | Valve Chambers & Valves Installation | 21d | 2027-02-09 | 2027-03-06 | SDR-2-TC-CCTV-1080, SDR-2-CON-TS-ZA-2060, SDR-2-CON-TS-ZA-2050 |  | 17d |
|  | 5 | **Testing** |  | 2027-03-07 | 2027-03-27 |  |  |  |
| SDR-2-CON-TS-ZA-2080 |  | Testing Chambers & Valves Installation | 14d | 2027-03-07 | 2027-03-27 | SDR-2-CON-SE-ZA-2340, SDR-2-CON-SE-ZA-2330, SDR-2-CON-SE-ZA-2240 SS, SDR-2-CON-TS-ZA-2070 |  | 17d |
|  | 6 | **Backfilling** |  | 2027-03-28 | 2027-04-18 |  |  |  |
| SDR-2-CON-TS-ZA-2090 |  | Backfilling Chambers & Valves Installation | 19d | 2027-03-28 | 2027-04-18 | SDR-2-CON-TS-ZA-2080 |  | 17d |
|  | 5 | **TSE NETWORK IN ( PH2-A-MCE0 )** |  | 2026-09-07 | 2027-05-12 |  |  |  |
|  | 6 | **Pipes Work** |  | 2026-09-07 | 2027-05-12 |  |  |  |
|  | 1 | **Excavation** |  | 2026-09-07 | 2027-02-25 |  |  |  |
| SDR-2-CON-TS-ZA-3280 |  | Excavation for TSE HDPE Pipes 90 mm Section 1 | 20d | 2026-09-07 A | 2026-09-14 A | SDR-2-CON-SE-ZA-1660 | 100% |  |
| SDR-2-CON-TS-ZA-2600 |  | Excavation for TSE HDPE Pipes 90 mm Section 2 | 20d | 2027-02-02 | 2027-02-25 | SDR-2-CON-TS-ZA-3280, SDR-2-CON-TE-ZA-1840, SDR-2-CON-MV-ZA-1260 |  | 14d |
|  | 3 | **bedding Works** |  | 2026-09-30 | 2027-03-24 |  |  |  |
| SDR-2-CON-TS-ZA-2630 |  | Sand bedding for TSE HDPE Pipes 90 mm | 19d | 2026-09-30 A | 2027-03-24 | SDR-2-CON-TS-ZA-2600 | 25% | 14d |
|  | 2 | **Pipes Laying** |  | 2026-09-30 | 2027-04-14 |  |  |  |
| SDR-2-CON-TS-ZA-2610 |  | Install TSE 90 mm HDPE Pipe | 18d | 2026-09-30 A | 2027-04-14 | SDR-2-CON-TS-ZA-2630 | 25% | 14d |
|  | 5 | **Testing** |  | 2027-04-15 | 2027-04-26 |  |  |  |
| SDR-2-CON-TS-ZA-2620 |  | Testing of TSE HDPE Pipe 90 mm. | 10d | 2027-04-15 | 2027-04-26 | SDR-2-CON-TS-ZA-2610 |  | 14d |
|  | 4 | **Backfilling** |  | 2027-04-20 | 2027-05-12 |  |  |  |
| SDR-2-CON-TS-ZA-2640 |  | Backfilling of TSE HDPE Pipe 90 mm. | 20d | 2027-04-20 | 2027-05-12 | SDR-2-CON-TS-ZA-2620 SS+4d |  | 14d |
|  | 3 | **Valve Chambers & Valves** |  | 2026-10-05 | 2027-02-07 |  |  |  |
|  | 3 | **Excavation** |  | 2026-10-05 | 2026-11-19 |  |  |  |
| SDR-2-CON-TS-ZA-3290 |  | Excavation for Valve Chambers Section 1 | 21d | 2026-10-05 | 2026-10-28 | SDR-2-CON-TS-ZA-3280 SS |  | 72d |
| SDR-2-CON-TS-ZA-2660 |  | Excavation for Valve Chambers Section 2 | 19d | 2026-10-29 | 2026-11-19 | SDR-2-CON-TS-ZA-3290 |  | 72d |
|  | 1 | **bedding Works** |  | 2026-11-21 | 2026-12-13 |  |  |  |
| SDR-2-CON-TS-ZA-2650 |  | Sand bedding for Valve Chambers | 20d | 2026-11-21 | 2026-12-13 | SDR-2-CON-TS-ZA-2660 |  | 72d |
|  | 4 | **Install Chambers & Valves** |  | 2026-12-14 | 2027-01-06 |  |  |  |
| SDR-2-CON-TS-ZA-2670 |  | Valve Chambers & Valves Installation | 21d | 2026-12-14 | 2027-01-06 | SDR-2-CON-TS-ZA-2660, SDR-2-CON-TS-ZA-2650 |  | 72d |
|  | 5 | **Testing** |  | 2027-01-07 | 2027-01-14 |  |  |  |
| SDR-2-CON-TS-ZA-2680 |  | Testing Chambers & Valves Installation | 7d | 2027-01-07 | 2027-01-14 | SDR-2-CON-SE-ZA-2240 SS, SDR-2-CON-SE-ZA-2230 SS, SDR-2-CON-SE-ZA-2140 SS, SDR-2-CON-SE-ZA-2130, SDR-2-CON-TS-ZA-2670 |  | 72d |
|  | 6 | **Backfilling** |  | 2027-01-16 | 2027-02-07 |  |  |  |
| SDR-2-CON-TS-ZA-2690 |  | Backfilling Chambers & Valves Installation | 20d | 2027-01-16 | 2027-02-07 | SDR-2-CON-TS-ZA-2680 |  | 72d |
|  | 6 | **TSE NETWORK IN ( PH2-A-MCF0 )** |  | 2026-10-05 | 2027-03-24 |  |  |  |
|  | 6 | **Pipes Work** |  | 2026-10-05 | 2027-02-10 |  |  |  |
|  | 1 | **Excavation** |  | 2026-10-05 | 2026-11-19 |  |  |  |
| SDR-2-CON-TS-ZA-3300 |  | Excavation for TSE HDPE Pipes 90 mm Section 1 | 20d | 2026-10-05 | 2026-10-27 | SDR-2-CON-SE-ZA-1760 |  | 69d |
| SDR-2-CON-TS-ZA-2700 |  | Excavation for TSE HDPE Pipes 90 mm Section 2 | 20d | 2026-10-28 | 2026-11-19 | SDR-2-CON-TS-ZA-3300 |  | 69d |
|  | 3 | **bedding Works** |  | 2026-11-21 | 2026-12-13 |  |  |  |
| SDR-2-CON-TS-ZA-2730 |  | Sand bedding for TSE HDPE Pipes 90 mm | 20d | 2026-11-21 | 2026-12-13 | SDR-2-CON-TS-ZA-2700 |  | 69d |
|  | 2 | **Pipes Laying** |  | 2026-12-14 | 2027-01-04 |  |  |  |
| SDR-2-CON-TS-ZA-2710 |  | Install TSE 90 mm HDPE Pipe | 19d | 2026-12-14 | 2027-01-04 | SDR-2-CON-TS-ZA-2730 |  | 69d |
|  | 5 | **Testing** |  | 2027-01-05 | 2027-01-17 |  |  |  |
| SDR-2-CON-TS-ZA-2720 |  | Testing of TSE HDPE Pipe 90 mm. | 11d | 2027-01-05 | 2027-01-17 | SDR-2-CON-TS-ZA-2710 |  | 69d |
|  | 4 | **Backfilling** |  | 2027-01-18 | 2027-02-10 |  |  |  |
| SDR-2-CON-TS-ZA-2740 |  | Backfilling of TSE HDPE Pipe 90 mm. | 21d | 2027-01-18 | 2027-02-10 | SDR-2-CON-TS-ZA-2720 |  | 69d |

| ID | WBS | Task | Duration | Start | Finish | Predecessors | Complete | Total float |
| --- | --- | --- | --- | --- | --- | --- | --- | --- |
|  | 3 | **Valve Chambers & Valves** |  | 2026-10-05 | 2027-03-24 |  |  |  |
|  | 3 | **Excavation** |  | 2026-10-05 | 2026-12-26 |  |  |  |
| SDR-2-CON-TS-ZA-3310 |  | Excavation for Valve Chambers Section 1 | 20d | 2026-10-05 | 2026-10-27 | SDR-2-CON-TS-ZA-3300 SS |  | 87d |
| SDR-2-CON-TS-ZA-2760 |  | Excavation for Valve Chambers Section 2 | 20d | 2026-12-03 | 2026-12-26 | SDR-2-CON-TS-ZA-3310, SDR-2-CON-MV-ZA-1260, SDR-2-CON-MV-ZA-1220 |  | 56d |
|  | 1 | **bedding Works** |  | 2026-12-27 | 2027-01-16 |  |  |  |
| SDR-2-CON-TS-ZA-2750 |  | Sand bedding for Valve Chambers | 18d | 2026-12-27 | 2027-01-16 | SDR-2-CON-TS-ZA-2760 |  | 56d |
|  | 4 | **Install Chambers & Valves** |  | 2027-01-17 | 2027-02-09 |  |  |  |
| SDR-2-CON-TS-ZA-2770 |  | Valve Chambers & Valves Installation | 21d | 2027-01-17 | 2027-02-09 | SDR-2-CON-TS-ZA-2760, SDR-2-CON-TS-ZA-2750 |  | 56d |
|  | 5 | **Testing** |  | 2027-02-10 | 2027-02-23 |  |  |  |
| SDR-2-CON-TS-ZA-2780 |  | Testing Chambers & Valves Installation | 11d | 2027-02-10 | 2027-02-23 | SDR-2-CON-TS-ZA-2770 |  | 56d |
|  | 6 | **Backfilling** |  | 2027-02-24 | 2027-03-24 |  |  |  |
| SDR-2-CON-TS-ZA-2790 |  | Backfilling Chambers & Valves Installation | 21d | 2027-02-24 | 2027-03-24 | SDR-2-CON-TS-ZA-2780 |  | 56d |
|  | 7 | **TSE NETWORK IN ( PH2-A-MCG0 )** |  | 2026-10-05 | 2027-02-21 |  |  |  |
|  | 6 | **Pipes Work** |  | 2026-10-05 | 2027-02-10 |  |  |  |
|  | 1 | **Excavation** |  | 2026-10-05 | 2026-11-19 |  |  |  |
| SDR-2-CON-TS-ZA-3320 |  | Excavation for TSE HDPE Pipes 90 mm Section 1 | 20d | 2026-10-05 | 2026-10-27 | SDR-2-CON-SE-ZA-1860 |  | 43d |
| SDR-2-CON-TS-ZA-2800 |  | Excavation for TSE HDPE Pipes 90 mm Section 2 | 20d | 2026-10-28 | 2026-11-19 | SDR-2-CON-TS-ZA-3320 |  | 61d |
|  | 3 | **bedding Works** |  | 2026-11-21 | 2026-12-10 |  |  |  |
| SDR-2-CON-TS-ZA-2830 |  | Sand bedding for TSE HDPE Pipes 90 mm | 18d | 2026-11-21 | 2026-12-10 | SDR-2-CON-TS-ZA-2800 |  | 61d |
|  | 2 | **Pipes Laying** |  | 2026-12-12 | 2027-01-04 |  |  |  |
| SDR-2-CON-TS-ZA-2810 |  | Install TSE 90 mm HDPE Pipe | 21d | 2026-12-12 | 2027-01-04 | SDR-2-CON-TS-ZA-2830 |  | 61d |
|  | 5 | **Testing** |  | 2027-01-05 | 2027-01-19 |  |  |  |
| SDR-2-CON-TS-ZA-2820 |  | Testing of TSE HDPE Pipe 90 mm. | 13d | 2027-01-05 | 2027-01-19 | SDR-2-CON-TS-ZA-2810 |  | 61d |
|  | 4 | **Backfilling** |  | 2027-01-20 | 2027-02-10 |  |  |  |
| SDR-2-CON-TS-ZA-2840 |  | Backfilling of TSE HDPE Pipe 90 mm. | 19d | 2027-01-20 | 2027-02-10 | SDR-2-CON-TS-ZA-2820 |  | 61d |
|  | 3 | **Valve Chambers & Valves** |  | 2026-10-05 | 2027-02-21 |  |  |  |
|  | 3 | **Excavation** |  | 2026-10-05 | 2026-11-19 |  |  |  |
| SDR-2-CON-TS-ZA-3330 |  | Excavation for Valve Chambers Section 1 | 20d | 2026-10-05 | 2026-10-27 | SDR-2-CON-TS-ZA-3320 SS |  | 60d |
| SDR-2-CON-TS-ZA-2860 |  | Excavation for Valve Chambers Section 2 | 20d | 2026-10-28 | 2026-11-19 | SDR-2-CON-TS-ZA-3330 |  | 60d |
|  | 1 | **bedding Works** |  | 2026-11-21 | 2026-12-12 |  |  |  |
| SDR-2-CON-TS-ZA-2850 |  | Sand bedding for Valve Chambers | 19d | 2026-11-21 | 2026-12-12 | SDR-2-CON-TS-ZA-2860 |  | 60d |
|  | 4 | **Install Chambers & Valves** |  | 2026-12-13 | 2027-01-05 |  |  |  |
| SDR-2-CON-TS-ZA-2870 |  | Valve Chambers & Valves Installation | 21d | 2026-12-13 | 2027-01-05 | SDR-2-CON-TS-ZA-2860, SDR-2-CON-TS-ZA-2850 |  | 60d |
|  | 5 | **Testing** |  | 2027-01-06 | 2027-01-28 |  |  |  |
| SDR-2-CON-TS-ZA-2880 |  | Testing Chambers & Valves Installation | 20d | 2027-01-06 | 2027-01-28 | SDR-2-CON-TS-ZA-2870 |  | 60d |
|  | 6 | **Backfilling** |  | 2027-01-30 | 2027-02-21 |  |  |  |
| SDR-2-CON-TS-ZA-2890 |  | Backfilling Chambers & Valves Installation | 20d | 2027-01-30 | 2027-02-21 | SDR-2-CON-TS-ZA-2880 |  | 60d |
|  | 8 | **TSE NETWORK IN ( PH2-A-MCH0 )** |  | 2026-10-05 | 2027-04-07 |  |  |  |
|  | 6 | **Pipes Work** |  | 2026-10-05 | 2027-04-01 |  |  |  |
|  | 1 | **Excavation** |  | 2026-10-05 | 2027-01-02 |  |  |  |
| SDR-2-CON-TS-ZA-3340 |  | Excavation for TSE HDPE Pipes 250 mm Section 1 | 20d | 2026-10-05 | 2026-10-27 | SDR-2-CON-SE-ZA-1960 |  | 63d |
| SDR-2-CON-TS-ZA-1630 |  | Excavation for TSE HDPE Pipes 250 mm Section 2 | 20d | 2026-12-10 | 2027-01-02 | SDR-2-CON-TS-ZA-3340, SDR-2-CON-MV-ZA-1220, SDR-2-CON-MV-ZA-1180, SDR-2-CON-SL-ZA-2940 |  | 26d |
|  | 7 | **bedding Works** |  | 2027-01-03 | 2027-01-26 |  |  |  |
| SDR-2-CON-TS-ZA-1960 |  | Sand bedding for TSE HDPE Pipes 250 mm | 21d | 2027-01-03 | 2027-01-26 | SDR-2-CON-SL-ZA-3210, SDR-2-CON-TS-ZA-1630 |  | 31d |
|  | 2 | **Pipes Laying** |  | 2027-01-27 | 2027-02-20 |  |  |  |
| SDR-2-CON-TS-ZA-1640 |  | Install TSE 250 mm HDPE Pipe | 21d | 2027-01-27 | 2027-02-20 | SDR-2-CON-TS-ZA-1630, SDR-2-CON-TS-ZA-1960 |  | 31d |
|  | 5 | **Testing** |  | 2027-02-21 | 2027-03-16 |  |  |  |
| SDR-2-CON-TS-ZA-1710 |  | Testing of TSE HDPE Pipe 250 mm. | 16d | 2027-02-21 | 2027-03-16 | SDR-2-CON-TS-ZA-1640 |  | 31d |
|  | 8 | **Backfilling** |  | 2027-03-17 | 2027-04-01 |  |  |  |
| SDR-2-CON-TS-ZA-1970 |  | Backfilling of TSE HDPE Pipe 250 mm. | 14d | 2027-03-17 | 2027-04-01 | SDR-2-CON-TS-ZA-1710, SDR-2-CON-TS-ZA-1960 FS+14d |  | 31d |
|  | 3 | **Valve Chambers & Valves** |  | 2026-10-05 | 2027-04-07 |  |  |  |
|  | 3 | **Excavation** |  | 2026-10-05 | 2027-01-02 |  |  |  |
| SDR-2-CON-TS-ZA-3350 |  | Excavation for Valve Chambers Section 1 | 20d | 2026-10-05 | 2026-10-27 | SDR-2-CON-TS-ZA-3340 SS |  | 63d |
| SDR-2-CON-TS-ZA-2110 |  | Excavation for Valve Chambers Section 2 | 20d | 2026-12-10 | 2027-01-02 | SDR-2-CON-TS-ZA-3350, SDR-2-CON-TS-ZA-1630 SS |  | 26d |
|  | 1 | **bedding Works** |  | 2027-01-03 | 2027-01-26 |  |  |  |
| SDR-2-CON-TS-ZA-2100 |  | Sand bedding for Valve Chambers | 21d | 2027-01-03 | 2027-01-26 | SDR-2-CON-SL-ZA-3210, SDR-2-CON-TS-ZA-2110 |  | 26d |
|  | 4 | **Install Chambers & Valves** |  | 2027-01-27 | 2027-02-20 |  |  |  |
| SDR-2-CON-TS-ZA-2120 |  | Valve Chambers & Valves Installation | 21d | 2027-01-27 | 2027-02-20 | SDR-2-CON-TS-ZA-2110, SDR-2-CON-TS-ZA-2100 |  | 26d |
|  | 5 | **Testing** |  | 2027-02-21 | 2027-03-15 |  |  |  |
| SDR-2-CON-TS-ZA-2130 |  | Testing Chambers & Valves Installation | 15d | 2027-02-21 | 2027-03-15 | SDR-2-CON-TS-ZA-2120 |  | 26d |
|  | 6 | **Backfilling** |  | 2027-03-16 | 2027-04-07 |  |  |  |
| SDR-2-CON-TS-ZA-2140 |  | Backfilling Chambers & Valves Installation | 20d | 2027-03-16 | 2027-04-07 | SDR-2-CON-TS-ZA-2130 |  | 26d |
|  | 9 | **TSE NETWORK IN ( PH2-ART-MC00 )** |  | 2026-09-07 | 2027-03-18 |  |  |  |
|  | 6 | **Pipes Work** |  | 2026-09-07 | 2027-02-17 |  |  |  |
|  | 1 | **Excavation** |  | 2026-09-07 | 2026-11-19 |  |  |  |
| SDR-2-CON-TS-ZA-3360 |  | Excavation for TSE HDPE Pipes 450 mm Section 1 | 20d | 2026-09-07 A | 2026-09-14 A | SDR-2-CON-TS-ZA-3320 | 100% |  |
| SDR-2-CON-TS-ZA-1720 |  | Excavation for TSE HDPE Pipes 450 mm Section 2 | 20d | 2026-10-01 A | 2026-11-19 | SDR-2-CON-TS-ZA-3360 | 25% | 63d |
|  | 7 | **bedding Works** |  | 2026-11-21 | 2026-12-14 |  |  |  |
| SDR-2-CON-TS-ZA-1980 |  | Sand bedding for TSE HDPE Pipes 450 mm | 21d | 2026-11-21 | 2026-12-14 | SDR-2-CON-TS-ZA-1720 |  | 63d |
|  | 2 | **Pipes Laying** |  | 2026-12-15 | 2027-01-07 |  |  |  |

| ID | WBS | Task | Duration | Start | Finish | Predecessors | Complete | Total float |
| --- | --- | --- | --- | --- | --- | --- | --- | --- |
| SDR-2-CON-TS-ZA-1730 |  | Install TSE 450 mm HDPE Pipe | 21d | 2026-12-15 | 2027-01-07 | SDR-2-CON-TS-ZA-1720, SDR-2-CON-TS-ZA-1980 |  | 63d |
|  | 5 | **Testing** |  | 2027-01-09 | 2027-01-25 |  |  |  |
| SDR-2-CON-TS-ZA-1800 |  | Testing of TSE HDPE Pipe 450 mm. | 15d | 2027-01-09 | 2027-01-25 | SDR-2-CON-TS-ZA-1730 |  | 63d |
|  | 8 | **Backfilling** |  | 2027-01-26 | 2027-02-17 |  |  |  |
| SDR-2-CON-TS-ZA-1990 |  | Backfilling of TSE HDPE Pipe 450 mm. | 20d | 2027-01-26 | 2027-02-17 | SDR-2-CON-TS-ZA-1800, SDR-2-CON-TS-ZA-1980 FS+12d |  | 63d |
|  | 3 | **Valve Chambers & Valves** |  | 2026-10-28 | 2027-03-18 |  |  |  |
|  | 3 | **Excavation** |  | 2026-10-28 | 2026-12-13 |  |  |  |
| SDR-2-CON-TS-ZA-3370 |  | Excavation for Valve Chambers Section 1 | 20d | 2026-10-28 | 2026-11-19 | SDR-2-CON-TS-ZA-3360 SS |  | 43d |
| SDR-2-CON-TS-ZA-2160 |  | Excavation for Valve Chambers Section 2 | 20d | 2026-11-21 | 2026-12-13 | SDR-2-CON-TS-ZA-3370 |  | 43d |
|  | 1 | **bedding Works** |  | 2026-12-14 | 2027-01-06 |  |  |  |
| SDR-2-CON-TS-ZA-2150 |  | Sand bedding for Valve Chambers | 21d | 2026-12-14 | 2027-01-06 | SDR-2-CON-TS-ZA-2160 |  | 43d |
|  | 4 | **Install Chambers & Valves** |  | 2027-01-07 | 2027-01-31 |  |  |  |
| SDR-2-CON-TS-ZA-2170 |  | Valve Chambers & Valves Installation | 21d | 2027-01-07 | 2027-01-31 | SDR-2-CON-TS-ZA-2160, SDR-2-CON-TS-ZA-2150 |  | 43d |
|  | 5 | **Testing** |  | 2027-02-01 | 2027-02-17 |  |  |  |
| SDR-2-CON-TS-ZA-2180 |  | Testing Chambers & Valves Installation | 15d | 2027-02-01 | 2027-02-17 | SDR-2-CON-TS-ZA-2170 |  | 43d |
|  | 6 | **Backfilling** |  | 2027-02-18 | 2027-03-18 |  |  |  |
| SDR-2-CON-TS-ZA-2190 |  | Backfilling Chambers & Valves Installation | 20d | 2027-02-18 | 2027-03-18 | SDR-2-CON-TS-ZA-2180 |  | 43d |
|  | 10 | **TSE NETWORK IN ( PH2-ART-MC10 )** |  | 2026-08-06 | 2027-03-03 |  |  |  |
|  | 6 | **Pipes Work** |  | 2026-08-06 | 2026-12-07 |  |  |  |
|  | 1 | **Excavation** |  | 2026-08-06 | 2026-10-01 |  |  |  |
| SDR-2-CON-TS-ZA-3380 |  | Excavation for TSE HDPE Pipes 450 mm Section 1 | 20d | 2026-08-06 A | 2026-09-03 A | SDR-2-CON-TS-ZA-3360 | 100% |  |
| SDR-2-CON-TS-ZA-3100 |  | Excavation for TSE HDPE Pipes 450 mm Section 2 | 19d | 2026-08-25 A | 2026-10-01 A | SDR-2-CON-TS-ZA-3380, SDR-2-CON-SL-ZA-3170 FF | 100% |  |
|  | 7 | **bedding Works** |  | 2026-08-13 | 2026-12-07 |  |  |  |
| SDR-2-CON-TS-ZA-3130 |  | Sand bedding for TSE HDPE Pipes 450 mm | 15d | 2026-08-13 A | 2026-12-07 | SDR-2-CON-TS-ZA-3100 FF | 50% | 125d |
|  | 2 | **Pipes Laying** |  | 2026-08-17 | 2026-12-07 |  |  |  |
| SDR-2-CON-TS-ZA-3110 |  | Install TSE 450 mm HDPE Pipe | 21d | 2026-08-17 A | 2026-12-07 | SDR-2-CON-TS-ZA-3100 FF, SDR-2-CON-TS-ZA-3130 FF | 50% | 125d |
|  | 5 | **Testing** |  | 2026-08-25 | 2026-12-07 |  |  |  |
| SDR-2-CON-TS-ZA-3120 |  | Testing of TSE HDPE Pipe 450 mm. | 13d | 2026-08-25 A | 2026-12-07 | SDR-2-CON-TS-ZA-3110 FF | 50% | 125d |
|  | 8 | **Backfilling** |  | 2026-08-31 | 2026-12-07 |  |  |  |
| SDR-2-CON-TS-ZA-3140 |  | Backfilling of TSE HDPE Pipe 450 mm. | 19d | 2026-08-31 A | 2026-12-07 | SDR-2-CON-TS-ZA-3120 FF | 50% | 125d |
|  | 3 | **Valve Chambers & Valves** |  | 2026-10-28 | 2027-03-03 |  |  |  |
|  | 3 | **Excavation** |  | 2026-10-28 | 2026-12-12 |  |  |  |
| SDR-2-CON-TS-ZA-3390 |  | Excavation for Valve Chambers Section 1 | 20d | 2026-10-28 | 2026-11-19 | SDR-2-CON-TS-ZA-3380 SS |  | 52d |
| SDR-2-CON-TS-ZA-3160 |  | Excavation for Valve Chambers Section 2 | 19d | 2026-11-21 | 2026-12-12 | SDR-2-CON-TS-ZA-3390, SDR-2-CON-ST-ZA-5550 |  | 52d |
|  | 1 | **bedding Works** |  | 2026-12-13 | 2027-01-02 |  |  |  |
| SDR-2-CON-TS-ZA-3150 |  | Sand bedding for Valve Chambers | 18d | 2026-12-13 | 2027-01-02 | SDR-2-CON-TS-ZA-3160 |  | 52d |
|  | 4 | **Install Chambers & Valves** |  | 2027-01-03 | 2027-01-26 |  |  |  |
| SDR-2-CON-TS-ZA-3170 |  | Valve Chambers & Valves Installation | 21d | 2027-01-03 | 2027-01-26 | SDR-2-CON-TS-ZA-3160, SDR-2-CON-TS-ZA-3150 |  | 52d |
|  | 5 | **Testing** |  | 2027-01-27 | 2027-02-07 |  |  |  |
| SDR-2-CON-TS-ZA-3180 |  | Testing Chambers & Valves Installation | 10d | 2027-01-27 | 2027-02-07 | SDR-2-CON-TS-ZA-3170 |  | 52d |
|  | 6 | **Backfilling** |  | 2027-02-08 | 2027-03-03 |  |  |  |
| SDR-2-CON-TS-ZA-3190 |  | Backfilling Chambers & Valves Installation | 20d | 2027-02-08 | 2027-03-03 | SDR-2-CON-TS-ZA-3180 |  | 52d |
|  | ZG | **ZONE G** |  | 2026-08-12 | 2027-05-12 |  |  |  |
|  | 1 | **TSE NETWORK IN ( PH2-G-MCA0 )** |  | 2026-08-12 | 2027-02-16 |  |  |  |
|  | 6 | **Pipes Work** |  | 2026-08-12 | 2026-11-12 |  |  |  |
|  | 1 | **Excavation** |  | 2026-08-12 | 2026-10-05 |  |  |  |
| SDR-2-CON-TS-ZA-2300 |  | Excavation for TSE HDPE Pipes 225 mm Section 2 | 21d | 2026-08-12 A | 2026-10-05 | SDR-2-CON-TS-ZA-3400 FF | 30% | 84d |
| SDR-2-CON-TS-ZA-3400 |  | Excavation for TSE HDPE Pipes 225 mm Section 1 | 21d | 2026-08-12 A | 2026-10-05 | SDR-2-CON-SE-ZA-2360 | 30% | 64d |
|  | 6 | **bedding Works** |  | 2026-08-24 | 2026-10-05 |  |  |  |
| SDR-2-CON-TS-ZA-2380 |  | Sand bedding for TSE HDPE Pipes 225 mm | 21d | 2026-08-24 A | 2026-10-05 | SDR-2-CON-TS-ZA-2300 FF | 20% | 146d |
|  | 2 | **Pipes Laying** |  | 2026-08-25 | 2026-10-05 |  |  |  |
| SDR-2-CON-TS-ZA-2310 |  | Install TSE 225 mm HDPE Pipe | 21d | 2026-08-25 A | 2026-10-05 | SDR-2-CON-TS-ZA-2300 FF, SDR-2-CON-TS-ZA-2380 FF | 20% | 146d |
|  | 5 | **Testing** |  | 2026-10-06 | 2026-10-20 |  |  |  |
| SDR-2-CON-TS-ZA-2370 |  | Testing of TSE HDPE Pipe 225 mm. | 13d | 2026-10-06 | 2026-10-20 | SDR-2-CON-TS-ZA-2310 |  | 146d |
|  | 7 | **Backfilling** |  | 2026-10-21 | 2026-11-12 |  |  |  |
| SDR-2-CON-TS-ZA-2390 |  | Backfilling of TSE HDPE Pipe 225 mm. | 20d | 2026-10-21 | 2026-11-12 | SDR-2-CON-TS-ZA-2370 |  | 146d |
|  | 3 | **Valve Chambers & Valves** |  | 2026-10-05 | 2027-02-16 |  |  |  |
|  | 3 | **Excavation** |  | 2026-10-05 | 2026-11-19 |  |  |  |
| SDR-2-CON-TS-ZA-3410 |  | Excavation for Valve Chambers Section 1 | 20d | 2026-10-05 | 2026-10-27 | SDR-2-CON-TS-ZA-3400 SS |  | 64d |
| SDR-2-CON-TS-ZA-2330 |  | Excavation for Valve Chambers Section 2 | 20d | 2026-10-28 | 2026-11-19 | SDR-2-CON-TS-ZA-3410 |  | 64d |
|  | 1 | **bedding Works** |  | 2026-11-21 | 2026-12-14 |  |  |  |
| SDR-2-CON-TS-ZA-2320 |  | Sand bedding for Valve Chambers | 21d | 2026-11-21 | 2026-12-14 | SDR-2-CON-ST-ZA-6080, SDR-2-CON-ST-ZA-5630, SDR-2-CON-ST-ZA-5550, SDR-2-CON-TS-ZA-2330 |  | 64d |
|  | 4 | **Install Chambers & Valves** |  | 2026-12-15 | 2027-01-07 |  |  |  |
| SDR-2-CON-TS-ZA-2340 |  | Valve Chambers & Valves Installation | 21d | 2026-12-15 | 2027-01-07 | SDR-2-CON-TS-ZA-2330, SDR-2-CON-TS-ZA-2320 |  | 64d |
|  | 5 | **Testing** |  | 2027-01-09 | 2027-01-23 |  |  |  |
| SDR-2-CON-TS-ZA-2350 |  | Testing Chambers & Valves Installation | 13d | 2027-01-09 | 2027-01-23 | SDR-2-CON-TS-ZA-2340 |  | 64d |
|  | 6 | **Backfilling** |  | 2027-01-25 | 2027-02-16 |  |  |  |
| SDR-2-CON-TS-ZA-2360 |  | Backfilling Chambers & Valves Installation | 20d | 2027-01-25 | 2027-02-16 | SDR-2-CON-TS-ZA-2350 FS+1d |  | 64d |
|  | 2 | **TSE NETWORK IN ( PH2-G-MCE0 )** |  | 2026-08-12 | 2027-04-19 |  |  |  |
|  | 6 | **Pipes Work** |  | 2026-08-12 | 2026-12-29 |  |  |  |

| ID | WBS | Task | Duration | Start | Finish | Predecessors | Complete | Total float |
| --- | --- | --- | --- | --- | --- | --- | --- | --- |
|  | 1 | **Excavation** |  | 2026-08-12 | 2026-10-05 |  |  |  |
| SDR-2-CON-TS-ZA-2400 |  | Excavation for TSE HDPE Pipes 125 mm Section 2 | 20d | 2026-08-12 A | 2026-10-05 | SDR-2-CON-TS-ZA-3420 FF | 30% | 93d |
| SDR-2-CON-TS-ZA-3420 |  | Excavation for TSE HDPE Pipes 125 mm Section 1 | 21d | 2026-08-12 A | 2026-10-05 | SDR-2-CON-SE-ZA-2060 | 30% | 93d |
|  | 3 | **bedding Works** |  | 2026-10-06 | 2026-10-29 |  |  |  |
| SDR-2-CON-TS-ZA-2430 |  | Sand bedding for TSE HDPE Pipes 125 mm | 21d | 2026-10-06 | 2026-10-29 | SDR-2-CON-ST-ZA-6080, SDR-2-CON-TS-ZA-2400 |  | 106d |
|  | 2 | **Pipes Laying** |  | 2026-10-31 | 2026-11-23 |  |  |  |
| SDR-2-CON-TS-ZA-2410 |  | Install TSE 125 mm HDPE Pipe | 21d | 2026-10-31 | 2026-11-23 | SDR-2-CON-TS-ZA-2400, SDR-2-CON-TS-ZA-2430 |  | 106d |
|  | 5 | **Testing** |  | 2026-11-24 | 2026-12-05 |  |  |  |
| SDR-2-CON-TS-ZA-2420 |  | Testing of TSE HDPE Pipe 125 mm. | 10d | 2026-11-24 | 2026-12-05 | SDR-2-CON-TS-ZA-2410 |  | 106d |
|  | 4 | **Backfilling** |  | 2026-12-06 | 2026-12-29 |  |  |  |
| SDR-2-CON-TS-ZA-2440 |  | Backfilling of TSE HDPE Pipe 125 mm. | 21d | 2026-12-06 | 2026-12-29 | SDR-2-CON-TS-ZA-2420 |  | 106d |
|  | 3 | **Valve Chambers & Valves** |  | 2026-10-06 | 2027-04-19 |  |  |  |
|  | 3 | **Excavation** |  | 2026-10-06 | 2026-11-23 |  |  |  |
| SDR-2-CON-TS-ZA-3430 |  | Excavation for Valve Chambers Section 1 | 21d | 2026-10-06 | 2026-10-29 | SDR-2-CON-TS-ZA-3400 |  | 64d |
| SDR-2-CON-TS-ZA-2460 |  | Excavation for Valve Chambers Section 2 | 21d | 2026-10-31 | 2026-11-23 | SDR-2-CON-TS-ZA-3430 |  | 64d |
|  | 1 | **bedding Works** |  | 2026-11-24 | 2026-12-17 |  |  |  |
| SDR-2-CON-TS-ZA-2450 |  | Sand bedding for Valve Chambers | 21d | 2026-11-24 | 2026-12-17 | SDR-2-CON-ST-ZA-6080, SDR-2-CON-TS-ZA-2460 |  | 64d |
|  | 4 | **Install Chambers & Valves** |  | 2027-02-13 | 2027-03-14 |  |  |  |
| SDR-2-CON-TS-ZA-2470 |  | Valve Chambers & Valves Installation | 21d | 2027-02-13 | 2027-03-14 | SDR-2-CON-TS-ZA-2530, SDR-2-CON-TS-ZA-2460, SDR-2-CON-TS-ZA-2450 |  | 16d |
|  | 5 | **Testing** |  | 2027-03-15 | 2027-03-24 |  |  |  |
| SDR-2-CON-TS-ZA-2480 |  | Testing Chambers & Valves Installation | 9d | 2027-03-15 | 2027-03-24 | SDR-2-CON-TS-ZA-2470 |  | 16d |
|  | 6 | **Backfilling** |  | 2027-03-27 | 2027-04-19 |  |  |  |
| SDR-2-CON-TS-ZA-2490 |  | Backfilling Chambers & Valves Installation | 21d | 2027-03-27 | 2027-04-19 | SDR-2-CON-TS-ZA-2480 FS+1d |  | 16d |
|  | 3 | **TSE NETWORK IN ( PH2-G-MCF0 )** |  | 2026-08-13 | 2027-04-21 |  |  |  |
|  | 6 | **Pipes Work** |  | 2026-08-13 | 2027-04-06 |  |  |  |
|  | 1 | **Excavation** |  | 2026-08-13 | 2026-12-07 |  |  |  |
| SDR-2-CON-TS-ZA-2900 |  | Excavation for TSE HDPE Pipes 90 mm Section 2 | 20d | 2026-08-13 A | 2026-12-07 | SDR-2-CON-TS-ZA-3440 FF, SDR-2-CON-SL-ZA-2970 FF | 30% | 21d |
| SDR-2-CON-TS-ZA-3440 |  | Excavation for TSE HDPE Pipes 90 mm Section 1 | 21d | 2026-08-13 A | 2026-11-07 | SDR-2-CON-SE-ZA-2260, SDR-2-PRO-ST-E-1200 FF | 30% | 32d |
|  | 3 | **bedding Works** |  | 2026-12-20 | 2027-01-12 |  |  |  |
| SDR-2-CON-TS-ZA-2930 |  | Sand bedding for TSE HDPE Pipes 90 mm | 21d | 2026-12-20 | 2027-01-12 | SDR-2-CON-ST-ZA-4430 SS, SDR-2-CON-RW-ZG-2110, SDR-2-CON-SL-ZA-3130, SDR-2-CON-TS-ZA-2900 |  | 32d |
|  | 2 | **Pipes Laying** |  | 2027-01-13 | 2027-02-06 |  |  |  |
| SDR-2-CON-TS-ZA-2910 |  | Install TSE 90 mm HDPE Pipe | 21d | 2027-01-13 | 2027-02-06 | SDR-2-CON-ST-ZA-4350 FS+4d, SDR-2-CON-TS-ZA-2930 |  | 32d |
|  | 5 | **Testing** |  | 2027-02-13 | 2027-03-08 |  |  |  |
| SDR-2-CON-TS-ZA-2920 |  | Testing of TSE HDPE Pipe 90 mm. | 20d | 2027-02-13 | 2027-03-08 | SDR-2-CON-TS-ZA-2530, SDR-2-CON-TS-ZA-2910 |  | 27d |
|  | 4 | **Backfilling** |  | 2027-03-14 | 2027-04-06 |  |  |  |
| SDR-2-CON-TS-ZA-2940 |  | Backfilling of TSE HDPE Pipe 90 mm. | 21d | 2027-03-14 | 2027-04-06 | SDR-2-CON-TS-ZA-2920 |  | 27d |
|  | 3 | **Valve Chambers & Valves** |  | 2026-11-05 | 2027-04-21 |  |  |  |
|  | 3 | **Excavation** |  | 2026-11-05 | 2026-12-21 |  |  |  |
| SDR-2-CON-TS-ZA-3450 |  | Excavation for Valve Chambers Section 1 | 20d | 2026-11-05 | 2026-11-28 | SDR-2-CON-TS-ZA-3440 SS |  | 32d |
| SDR-2-CON-TS-ZA-2960 |  | Excavation for Valve Chambers Section 2 | 20d | 2026-11-29 | 2026-12-21 | SDR-2-CON-TS-ZA-3450 |  | 32d |
|  | 1 | **bedding Works** |  | 2027-01-12 | 2027-02-01 |  |  |  |
| SDR-2-CON-TS-ZA-2950 |  | Sand bedding for Valve Chambers | 18d | 2027-01-12 | 2027-02-01 | SDR-2-CON-ST-ZA-4430, SDR-2-CON-TS-ZA-2960 |  | 14d |
|  | 4 | **Install Chambers & Valves** |  | 2027-02-02 | 2027-02-27 |  |  |  |
| SDR-2-CON-TS-ZA-2970 |  | Valve Chambers & Valves Installation | 21d | 2027-02-02 | 2027-02-27 | SDR-2-CON-ST-ZA-4200 FS+3d, SDR-2-CON-TS-ZA-2960, SDR-2-CON-TS-ZA-2950 |  | 14d |
|  | 5 | **Testing** |  | 2027-02-28 | 2027-03-27 |  |  |  |
| SDR-2-CON-TS-ZA-2980 |  | Testing Chambers & Valves Installation | 20d | 2027-02-28 | 2027-03-27 | SDR-2-CON-TS-ZA-2970 |  | 14d |
|  | 6 | **Backfilling** |  | 2027-03-29 | 2027-04-21 |  |  |  |
| SDR-2-CON-TS-ZA-2990 |  | Backfilling Chambers & Valves Installation | 21d | 2027-03-29 | 2027-04-21 | SDR-2-CON-TS-ZA-2980 FS+1d |  | 14d |
|  | 4 | **TSE NETWORK IN ( PH2-G-MCG0 )** |  | 2026-08-13 | 2027-05-11 |  |  |  |
|  | 6 | **Pipes Work** |  | 2026-08-13 | 2027-01-17 |  |  |  |
|  | 1 | **Excavation** |  | 2026-08-13 | 2026-10-05 |  |  |  |
| SDR-2-CON-TS-ZA-3000 |  | Excavation for TSE HDPE Pipes 90 mm Section 2 | 20d | 2026-08-13 A | 2026-10-05 | SDR-2-CON-TS-ZA-3460 FF | 40% | 81d |
| SDR-2-CON-TS-ZA-3460 |  | Excavation for TSE HDPE Pipes 90 mm Section 1 | 20d | 2026-08-13 A | 2026-09-27 A | SDR-2-CON-SE-ZA-2360 | 100% |  |
|  | 3 | **bedding Works** |  | 2026-10-06 | 2026-10-29 |  |  |  |
| SDR-2-CON-TS-ZA-3030 |  | Sand bedding for TSE HDPE Pipes 90 mm | 21d | 2026-10-06 | 2026-10-29 | SDR-2-CON-RW-ZG-2110, SDR-2-CON-TS-ZA-3000 |  | 103d |
|  | 2 | **Pipes Laying** |  | 2026-10-31 | 2026-11-23 |  |  |  |
| SDR-2-CON-TS-ZA-3010 |  | Install TSE 90 mm HDPE Pipe | 21d | 2026-10-31 | 2026-11-23 | SDR-2-CON-TS-ZA-3030 |  | 103d |
|  | 5 | **Testing** |  | 2026-11-24 | 2026-12-08 |  |  |  |
| SDR-2-CON-TS-ZA-3020 |  | Testing of TSE HDPE Pipe 90 mm. | 13d | 2026-11-24 | 2026-12-08 | SDR-2-CON-SE-ZA-2340, SDR-2-CON-SE-ZA-2330 FS+5d, SDR-2-CON-TS-ZA-3010 |  | 103d |
|  | 4 | **Backfilling** |  | 2026-12-24 | 2027-01-17 |  |  |  |
| SDR-2-CON-TS-ZA-3040 |  | Backfilling of TSE HDPE Pipe 90 mm. | 21d | 2026-12-24 | 2027-01-17 | SDR-2-CON-SE-ZA-2440, SDR-2-CON-SE-ZA-2230, SDR-2-CON-SE-ZA-2140, SDR-2-CON-TS-ZA-3020 |  | 90d |
|  | 3 | **Valve Chambers & Valves** |  | 2026-10-05 | 2027-05-11 |  |  |  |
|  | 3 | **Excavation** |  | 2026-10-05 | 2026-11-19 |  |  |  |
| SDR-2-CON-TS-ZA-3470 |  | Excavation for Valve Chambers Section 1 | 20d | 2026-10-05 | 2026-10-27 | SDR-2-CON-TS-ZA-3460 SS |  | 81d |
| SDR-2-CON-TS-ZA-3060 |  | Excavation for Valve Chambers Section 2 | 20d | 2026-10-28 | 2026-11-19 | SDR-2-CON-TS-ZA-3470 |  | 81d |
|  | 1 | **bedding Works** |  | 2027-01-12 | 2027-02-04 |  |  |  |
| SDR-2-CON-TS-ZA-3050 |  | Sand bedding for Valve Chambers | 21d | 2027-01-12 | 2027-02-04 | SDR-2-CON-ST-ZA-4880, SDR-2-CON-ST-ZA-4580, SDR-2-CON-ST-ZA-4500, SDR-2-CON-ST-ZA-4430, SDR-2-CON-TS-ZA-3060 |  | 36d |
|  | 4 | **Install Chambers & Valves** |  | 2027-03-03 | 2027-03-31 |  |  |  |
| SDR-2-CON-TS-ZA-3070 |  | Valve Chambers & Valves Installation | 21d | 2027-03-03 | 2027-03-31 | SDR-2-CON-ST-ZA-3350, SDR-2-CON-TS-ZA-3060, SDR-2-CON-TS-ZA-3050 |  | 15d |
|  | 5 | **Testing** |  | 2027-03-25 | 2027-04-15 |  |  |  |

| ID | WBS | Task | Duration | Start | Finish | Predecessors | Complete | Total float |
| --- | --- | --- | --- | --- | --- | --- | --- | --- |
| SDR-2-CON-TS-ZA-3080 |  | Testing Chambers & Valves Installation | 19d | 2027-03-25 | 2027-04-15 | SDR-2-CON-SE-ZA-2030, SDR-2-CON-ST-ZA-5480, SDR-2-CON-TS-ZA-3070 SS+15d |  | 15d |
|  | 6 | **Backfilling** |  | 2027-04-18 | 2027-05-11 |  |  |  |
| SDR-2-CON-TS-ZA-3090 |  | Backfilling Chambers & Valves Installation | 21d | 2027-04-18 | 2027-05-11 | SDR-2-CON-TS-ZA-3080 FS+1d |  | 15d |
|  | 5 | **TSE NETWORK IN ( PH2-G-MCZ0 )** |  | 2026-08-13 | 2027-05-12 |  |  |  |
|  | 6 | **Pipes Work** |  | 2026-08-13 | 2027-05-12 |  |  |  |
|  | 1 | **Excavation** |  | 2026-08-13 | 2026-10-05 |  |  |  |
| SDR-2-CON-TS-ZA-2500 |  | Excavation for TSE HDPE Pipes 125 mm Section 2 | 20d | 2026-08-13 A | 2026-10-05 | SDR-2-CON-RW-ZG-2540, SDR-2-CON-TS-ZA-3480 FF | 40% | 80d |
| SDR-2-CON-TS-ZA-3480 |  | Excavation for TSE HDPE Pipes 125 mm Section 1 | 21d | 2026-08-13 A | 2026-10-05 | SDR-2-CON-SE-ZA-2360 | 40% | 64d |
|  | 3 | **bedding Works** |  | 2027-01-19 | 2027-02-11 |  |  |  |
| SDR-2-CON-TS-ZA-2530 |  | Sand bedding for TSE HDPE Pipes 125 mm | 21d | 2027-01-19 | 2027-02-11 | SDR-2-CON-ST-ZA-4880, SDR-2-CON-ST-ZA-4580, SDR-2-CON-ST-ZA-4050 FS+2d, SDR-2-CON-ST-ZA-3760, SDR-2-CON-ST-ZA-1140, SDR-2-CON-RW-ZG-2110, SDR-2-CON-TS-ZA-2500 |  | 8d |
|  | 2 | **Pipes Laying** |  | 2027-02-13 | 2027-03-14 |  |  |  |
| SDR-2-CON-TS-ZA-2510 |  | Install TSE 125 mm HDPE Pipe | 21d | 2027-02-13 | 2027-03-14 | SDR-2-CON-TS-ZA-2500, SDR-2-CON-TS-ZA-2530 |  | 39d |
|  | 5 | **Testing** |  | 2027-03-25 | 2027-04-03 |  |  |  |
| SDR-2-CON-TS-ZA-2520 |  | Testing of TSE HDPE Pipe 125 mm. | 8d | 2027-03-25 | 2027-04-03 | SDR-2-CON-TS-ZA-2840, SDR-2-CON-ST-ZA-7040, SDR-2-CON-ST-ZA-7030, SDR-2-CON-ST-ZA-7020, SDR-2-CON-ST-ZA-7010, SDR-2-CON-ST-ZA-6940, SDR-2-CON-TS-ZA-2510 |  | 30d |
|  | 4 | **Backfilling** |  | 2027-04-22 | 2027-05-12 |  |  |  |
| SDR-2-CON-TS-ZA-2540 |  | Backfilling of TSE HDPE Pipe 125 mm. | 18d | 2027-04-22 | 2027-05-12 | SDR-2-TC-CW-1010, SDR-2-CON-PW-ZA-2320, SDR-2-CON-PW-ZA-2350, SDR-2-CON-PW-ZA-1070 SS, SDR-2-CON-PW-ZA-2210, SDR-2-CON-TS-ZA-2590, SDR-2-CON-TS-ZA-3040, SDR-2-CON-TS-ZA-2990, SDR-2-CON-TS-ZA-2940, SDR-2-CON-TS-ZA-2490, SDR-2-CON-TS-ZA-2440, SDR-2-CON-TS-ZA-2360, SDR-2-CON-TS-ZA-2390, SDR-2-CON-TS-ZA-3190, SDR-2-CON-TS-ZA-3140, SDR-2-CON-TS-ZA-2190, SDR-2-CON-TS-ZA-1990, SDR-2-CON-TS-ZA-2140, SDR-2-CON-TS-ZA-1970, SDR-2-CON-TS-ZA-2890, SDR-2-CON-TS-ZA-2840, SDR-2-CON-TS-ZA-2740, SDR-2-CON-TS-ZA-2690 SS, SDR-2-CON-TS-ZA-2090, SDR-2-CON-TS-ZA-1950, SDR-2-CON-TS-ZA-2040, SDR-2-CON-TS-ZA-1930 SS, SDR-2-CON-TS-ZA-1930 FF, SDR-2-CON-TS-ZA-2260, SDR-2-CON-TS-ZA-2290, SDR-2-CON-TS-ZA-1070, SDR-2-CON-TS-ZA-1910, SDR-2-CON-ST-ZA-5970 SS, SDR-2-CON-ST-ZA-5070 SS, SDR-2-CON-ST-ZA-4920 SS, SDR-2-CON-ST-ZA-4770, SDR-2-CON-ST-ZA-4620, SDR-2-CON-ST-ZA-4470, SDR-2-CON-ST-ZA-4320, SDR-2-CON-ST-ZA-4020, SDR-2-CON-RW-ZG-2210, SDR-2-CON-RW-ZG-2060, SDR-2-CON-RW-ZG-1910, SDR-2-CON-RW-ZG-1760, SDR-2-CON-RW-ZG-1610, SDR-2-CON-RW-ZG-1460, SDR-2-CON-RW-ZG-1310, SDR-2-CON-RW-ZG-1160, SDR-2-CON-RW-ZA-2830, SDR-2-CON-RW-ZA-2690, SDR-2-CON-RW-ZA-2550, SDR-2-CON-RW-ZA-2410, SDR-2-CON-RW-ZA-2270, SDR-2-CON-RW-ZA-2130, SDR-2-CON-RW-ZA-1990, SDR-2-CON-RW-ZA-1850, SDR-2-CON-RW-ZA-1710, SDR-2-CON-RW-ZA-1570, SDR-2-CON-RW-ZA-1290, SDR-2-CON-RW-ZA-1150, SDR-2-CON-TS-ZA-2520 |  | 14d |
|  | 3 | **Valve Chambers & Valves** |  | 2026-10-05 | 2027-04-15 |  |  |  |
|  | 3 | **Excavation** |  | 2026-10-05 | 2026-11-19 |  |  |  |
| SDR-2-CON-TS-ZA-3490 |  | Excavation for Valve Chambers Section 1 | 20d | 2026-10-05 | 2026-10-27 | SDR-2-CON-TS-ZA-3480 SS |  | 64d |
| SDR-2-CON-TS-ZA-2560 |  | Excavation for Valve Chambers Section 2 | 20d | 2026-10-28 | 2026-11-19 | SDR-2-CON-TS-ZA-3490 |  | 64d |
|  | 1 | **bedding Works** |  | 2027-01-12 | 2027-02-04 |  |  |  |
| SDR-2-CON-TS-ZA-2550 |  | Sand bedding for Valve Chambers | 21d | 2027-01-12 | 2027-02-04 | SDR-2-CON-ST-ZA-5030, SDR-2-CON-ST-ZA-4950, SDR-2-CON-ST-ZA-4880, SDR-2-CON-ST-ZA-4800, SDR-2-CON-ST-ZA-4730, SDR-2-CON-TS-ZA-2560 |  | 19d |
|  | 4 | **Install Chambers & Valves** |  | 2027-02-06 | 2027-03-02 |  |  |  |
| SDR-2-CON-TS-ZA-2570 |  | Valve Chambers & Valves Installation | 21d | 2027-02-06 | 2027-03-02 | SDR-2-CON-TS-ZA-2560, SDR-2-CON-TS-ZA-2550 |  | 19d |
|  | 5 | **Testing** |  | 2027-03-03 | 2027-03-24 |  |  |  |
| SDR-2-CON-TS-ZA-2580 |  | Testing Chambers & Valves Installation | 15d | 2027-03-03 | 2027-03-24 | SDR-2-CON-ST-ZA-3350, SDR-2-CON-SE-ZA-1930, SDR-2-CON-SE-ZA-1430, SDR-2-CON-TS-ZA-2570 |  | 19d |
|  | 6 | **Backfilling** |  | 2027-03-28 | 2027-04-15 |  |  |  |
| SDR-2-CON-TS-ZA-2590 |  | Backfilling Chambers & Valves Installation | 17d | 2027-03-28 | 2027-04-15 | SDR-2-CON-SE-ZA-2040, SDR-2-CON-TS-ZA-2580 FS+2d |  | 19d |
|  | PW | **Portable Water** |  | 2026-05-06 | 2027-05-15 |  |  |  |
|  | ZA | **ZONE A** |  | 2026-08-13 | 2027-05-15 |  |  |  |
|  | 1 | **PORTABLE WATER IN ( PH2-COL-MC10 )** |  | 2026-08-13 | 2027-05-03 |  |  |  |
|  | 7 | **Pipes Work** |  | 2026-08-13 | 2027-04-04 |  |  |  |
|  | 1 | **Excavation** |  | 2026-08-13 | 2027-01-11 |  |  |  |
| SDR-2-CON-PW-ZA-3710 |  | Excavation for PW HDPE Pipes 315 mm Section 1 | 21d | 2026-08-13 A | 2026-12-13 | SDR-2-CON-RW-ZG-2340 FF, SDR-2-CON-TS-ZA-1000 FF | 75% | 8d |
| SDR-2-CON-PW-ZA-1000 |  | Excavation for PW HDPE Pipes 315 mm Section 2 | 21d | 2026-08-20 A | 2027-01-11 | SDR-2-CON-RW-ZG-1360, SDR-2-CON-PW-ZA-3710 FF, SDR-2-CON-RW-ZA-1620 FF, SDR-2-CON-RW-ZG-1660 FF, SDR-2-CON-ST-ZA-4730 FF, SDR-2-CON-ST-ZA-4650 FF, SDR-2-CON-SL-ZA-3490 FF | 40% | 71d |
|  | 8 | **bedding Works** |  | 2026-08-25 | 2027-02-25 |  |  |  |
| SDR-2-CON-PW-ZA-2200 |  | Sand bedding for PW HDPE Pipes 315 mm | 19d | 2026-08-25 A | 2027-02-25 | SDR-2-CON-PW-ZA-1000 FF, SDR-2-CON-CC-ZA-1820 FF | 10% | 33d |
|  | 2 | **Pipes Laying** |  | 2026-08-27 | 2027-03-02 |  |  |  |
| SDR-2-CON-PW-ZA-1010 |  | Install PW 315 mm HDPE Pipe | 18d | 2026-08-27 A | 2027-03-02 | SDR-2-CON-PW-ZA-2200 FF, SDR-2-CON-ST-ZA-3350 FF, SDR-2-CON-SE-ZA-1440 FF | 30% | 29d |
|  | 5 | **Testing** |  | 2027-03-03 | 2027-03-15 |  |  |  |
| SDR-2-CON-PW-ZA-1080 |  | Testing of PW HDPE Pipe 315 mm. | 7d | 2027-03-03 | 2027-03-15 | SDR-2-CON-SE-ZA-2040 SS, SDR-2-CON-SE-ZA-1940, SDR-2-CON-SE-ZA-1830, SDR-2-CON-SE-ZA-1630, SDR-2-CON-SE-ZA-1540, SDR-2-CON-SE-ZA-1530, SDR-2-CON-PW-ZA-1010 |  | 29d |
|  | 9 | **Backfilling** |  | 2027-03-16 | 2027-04-04 |  |  |  |
| SDR-2-CON-PW-ZA-2210 |  | Backfilling of PW HDPE Pipe 315 mm. | 17d | 2027-03-16 | 2027-04-04 | SDR-2-CON-SE-ZA-1840, SDR-2-CON-SE-ZA-1740, SDR-2-CON-SE-ZA-1730, SDR-2-CON-PW-ZA-1080 |  | 29d |
|  | 3 | **Valve Chambers & Valves & Fire Hydrant** |  | 2026-12-13 | 2027-05-03 |  |  |  |
|  | 3 | **Excavation** |  | 2026-12-13 | 2027-01-27 |  |  |  |
| SDR-2-CON-PW-ZA-3720 |  | Excavation for Valve Chambers Section 1 | 20d | 2026-12-13 | 2027-01-04 | SDR-2-CON-PW-ZA-3710 SS, SDR-2-CON-RW-ZG-2420, SDR-2-CON-RW-ZG-1390 |  | 16d |
| SDR-2-CON-PW-ZA-1040 |  | Excavation for Valve Chambers Section 2 | 20d | 2027-01-05 | 2027-01-27 | SDR-2-CON-PW-ZA-3720 |  | 16d |
|  | 1 | **bedding Works** |  | 2027-01-28 | 2027-02-15 |  |  |  |
| SDR-2-CON-PW-ZA-1020 |  | Sand bedding for Valve Chambers | 16d | 2027-01-28 | 2027-02-15 | SDR-2-CON-PW-ZA-1040 |  | 16d |
|  | 4 | **Install Chambers & Valves & Fire Hydrant** |  | 2027-02-16 | 2027-03-16 |  |  |  |
| SDR-2-CON-PW-ZA-1050 |  | Install Chambers & Valves | 20d | 2027-02-16 | 2027-03-16 | SDR-2-CON-PW-ZA-1020 |  | 16d |
|  | 2 | **Testing** |  | 2027-03-31 | 2027-04-08 |  |  |  |
| SDR-2-CON-PW-ZA-1030 |  | Testing for Chambers & Valves | 8d | 2027-03-31 | 2027-04-08 | SDR-2-CON-SE-ZA-2040 SS, SDR-2-CON-ST-ZA-6220, SDR-2-CON-PW-ZA-1050 |  | 4d |
|  | 6 | **Backfilling** |  | 2027-04-10 | 2027-05-03 |  |  |  |
| SDR-2-CON-PW-ZA-1070 |  | Backfilling for Chambers & Valves | 21d | 2027-04-10 | 2027-05-03 | SDR-2-CON-RW-ZG-1760 SS+2d, SDR-2-CON-PW-ZA-1030 |  | 4d |
|  | 2 | **PORTABLE WATER IN ( PH2-COL-MC20 )** |  | 2026-08-16 | 2027-04-12 |  |  |  |
|  | 7 | **Pipes Work** |  | 2026-08-16 | 2027-03-29 |  |  |  |
|  | 1 | **Excavation** |  | 2026-08-16 | 2026-09-28 |  |  |  |
| SDR-2-CON-PW-ZA-2260 |  | Excavation for PW HDPE Pipes 315 mm Section 2 | 21d | 2026-08-16 A | 2026-09-28 A | SDR-2-CON-PW-ZA-3730 FF, SDR-2-CON-RW-ZG-1510, SDR-2-CON-RW-ZG-1660 FF, SDR-2-CON-ST-ZA-4130 FF, SDR-2-CON-SL-ZA-3460 FF | 100% |  |
| SDR-2-CON-PW-ZA-3730 |  | Excavation for PW HDPE Pipes 315 mm Section 1 | 21d | 2026-08-16 A | 2026-09-14 A | SDR-2-CON-PW-ZA-3710 FF | 100% |  |
|  | 8 | **bedding Works** |  | 2026-08-20 | 2027-01-06 |  |  |  |
| SDR-2-CON-PW-ZA-2340 |  | Sand bedding for PW HDPE Pipes 315 mm | 15d | 2026-08-20 A | 2027-01-06 | SDR-2-CON-PW-ZA-2260 FF, SDR-2-CON-RW-ZA-1050 | 35% | 99d |
|  | 2 | **Pipes Laying** |  | 2026-08-27 | 2027-01-06 |  |  |  |
| SDR-2-CON-PW-ZA-2270 |  | Install PW 315 mm HDPE Pipe | 15d | 2026-08-27 A | 2027-01-06 | SDR-2-CON-PW-ZA-2340 FF | 50% | 99d |
|  | 5 | **Testing** |  | 2026-09-01 | 2027-01-28 |  |  |  |
| SDR-2-CON-PW-ZA-2330 |  | Testing of PW HDPE Pipe 315 mm. | 8d | 2026-09-01 A | 2027-01-28 | SDR-2-CON-PW-ZA-2270 FF, SDR-2-CON-SE-ZA-1940 FF, SDR-2-CON-SE-ZA-1930 FF | 10% | 80d |
|  | 9 | **Backfilling** |  | 2026-09-03 | 2027-03-29 |  |  |  |
| SDR-2-CON-PW-ZA-2350 |  | Backfilling of PW HDPE Pipe 315 mm. | 17d | 2026-09-03 A | 2027-03-29 | SDR-2-CON-PW-ZA-2330 FF, SDR-2-CON-RW-ZG-1610 FF, SDR-2-CON-RW-ZG-1460 FF | 10% | 34d |
|  | 3 | **Valve Chambers & Valves & Fire Hydrant** |  | 2026-12-14 | 2027-04-12 |  |  |  |
|  | 3 | **Excavation** |  | 2026-12-14 | 2027-01-31 |  |  |  |

| ID | WBS | Task | Duration | Start | Finish | Predecessors | Complete | Total float |
| --- | --- | --- | --- | --- | --- | --- | --- | --- |
| SDR-2-CON-PW-ZA-3740 |  | Excavation for Valve Chambers Section 1 | 21d | 2026-12-14 | 2027-01-06 | SDR-2-CON-PW-ZA-3730 SS, SDR-2-CON-RW-ZG-1660, SDR-2-CON-RW-ZG-1510 |  | 22d |
| SDR-2-CON-PW-ZA-2300 |  | Excavation for Valve Chambers Section 2 | 21d | 2027-01-07 | 2027-01-31 | SDR-2-CON-PW-ZA-3740 |  | 22d |
|  | 1 | **bedding Works** |  | 2027-02-01 | 2027-02-17 |  |  |  |
| SDR-2-CON-PW-ZA-2280 |  | Sand bedding for Valve Chambers | 15d | 2027-02-01 | 2027-02-17 | SDR-2-CON-SL-ZA-3410, SDR-2-CON-PW-ZA-2300 |  | 22d |
|  | 4 | **Install Chambers & Valves & Fire Hydrant** |  | 2027-02-18 | 2027-03-08 |  |  |  |
| SDR-2-CON-PW-ZA-2310 |  | Install Chambers & Valves | 15d | 2027-02-18 | 2027-03-08 | SDR-2-CON-PW-ZA-2280 |  | 22d |
|  | 2 | **Testing** |  | 2027-03-14 | 2027-03-21 |  |  |  |
| SDR-2-CON-PW-ZA-2290 |  | Testing for Chambers & Valves | 7d | 2027-03-14 | 2027-03-21 | SDR-2-CON-PW-ZA-2310 |  | 22d |
|  | 6 | **Backfilling** |  | 2027-03-22 | 2027-04-12 |  |  |  |
| SDR-2-CON-PW-ZA-2320 |  | Backfilling for Chambers & Valves | 19d | 2027-03-22 | 2027-04-12 | SDR-2-CON-PW-ZA-2290 |  | 22d |
|  | 11 | **PORTABLE WATER IN ( PH2-A-MCA0 )** |  | 2026-12-14 | 2027-04-29 |  |  |  |
|  | 7 | **Pipes Work** |  | 2026-12-14 | 2027-04-28 |  |  |  |
|  | 1 | **Excavation** |  | 2026-12-14 | 2027-02-06 |  |  |  |
| SDR-2-CON-PW-ZA-3750 |  | Excavation for PW HDPE Pipe 225 mm. Section 1 | 21d | 2026-12-14 | 2027-01-06 | SDR-2-CON-PW-ZA-3730 SS+3d |  | 8d |
| SDR-2-CON-PW-ZA-1200 |  | Excavation for PW HDPE Pipe 225 mm. Section 2 | 21d | 2027-01-13 | 2027-02-06 | SDR-2-CON-PW-ZA-3750, SDR-2-CON-ST-ZA-5100 FS+2d |  | 9d |
|  | 3 | **bedding Works** |  | 2027-02-07 | 2027-03-02 |  |  |  |
| SDR-2-CON-PW-ZA-2220 |  | Sand bedding for PW HDPE Pipe 225 mm. | 20d | 2027-02-07 | 2027-03-02 | SDR-2-CON-PW-ZA-1200 |  | 9d |
|  | 2 | **Pipes Laying** |  | 2027-03-03 | 2027-03-27 |  |  |  |
| SDR-2-CON-PW-ZA-1210 |  | Install PW 225 mm HDPE Pipe | 17d | 2027-03-03 | 2027-03-27 | SDR-2-CON-PW-ZA-2220 |  | 9d |
|  | 5 | **Testing** |  | 2027-04-01 | 2027-04-08 |  |  |  |
| SDR-2-CON-PW-ZA-1280 |  | Testing of PW HDPE Pipe 225 mm. | 7d | 2027-04-01 | 2027-04-08 | SDR-2-CON-SE-ZA-2690, SDR-2-CON-PW-ZA-1210 FS+3d |  | 8d |
|  | 4 | **Backfilling** |  | 2027-04-10 | 2027-04-28 |  |  |  |
| SDR-2-CON-PW-ZA-2230 |  | Backfilling of PW HDPE Pipe 225 mm. | 17d | 2027-04-10 | 2027-04-28 | SDR-2-CON-PW-ZA-1280 |  | 8d |
|  | 3 | **Valve Chambers & Valves & Fire Hydrant** |  | 2026-12-14 | 2027-04-29 |  |  |  |
|  | 3 | **Excavation** |  | 2026-12-14 | 2027-01-28 |  |  |  |
| SDR-2-CON-PW-ZA-3760 |  | Excavation for Valve Chambers Section 1 | 20d | 2026-12-14 | 2027-01-05 | SDR-2-CON-PW-ZA-3750 SS |  | 14d |
| SDR-2-CON-PW-ZA-2680 |  | Excavation for Valve Chambers Section 2 | 20d | 2027-01-06 | 2027-01-28 | SDR-2-CON-PW-ZA-3760, SDR-2-CON-SL-ZA-3290 |  | 14d |
|  | 1 | **bedding Works** |  | 2027-01-30 | 2027-02-21 |  |  |  |
| SDR-2-CON-PW-ZA-2660 |  | Sand bedding for Valve Chambers | 20d | 2027-01-30 | 2027-02-21 | SDR-2-CON-PW-ZA-2680 |  | 14d |
|  | 4 | **Install Chambers & Valves & Fire Hydrant** |  | 2027-02-23 | 2027-03-22 |  |  |  |
| SDR-2-CON-PW-ZA-2690 |  | Install Chambers & Valves | 20d | 2027-02-23 | 2027-03-22 | SDR-2-CON-PW-ZA-2660 |  | 14d |
|  | 2 | **Testing** |  | 2027-04-04 | 2027-04-12 |  |  |  |
| SDR-2-CON-PW-ZA-2670 |  | Testing for Chambers & Valves | 8d | 2027-04-04 | 2027-04-12 | SDR-2-CON-SE-ZA-2690, SDR-2-CON-RW-ZG-1160, SDR-2-CON-PW-ZA-2690 FS+3d |  | 7d |
|  | 6 | **Backfilling** |  | 2027-04-13 | 2027-04-29 |  |  |  |
| SDR-2-CON-PW-ZA-2700 |  | Backfilling for Chambers & Valves | 15d | 2027-04-13 | 2027-04-29 | SDR-2-CON-PW-ZA-2670 |  | 7d |
|  | 12 | **PORTABLE WATER IN ( PH2-A-MCB0 )** |  | 2026-12-17 | 2027-05-06 |  |  |  |
|  | 7 | **Pipes Work** |  | 2026-12-17 | 2027-05-06 |  |  |  |
|  | 1 | **Excavation** |  | 2026-12-17 | 2027-02-03 |  |  |  |
| SDR-2-CON-PW-ZA-3770 |  | Excavation for PW HDPE Pipe 225 mm. Section 1 | 21d | 2026-12-17 | 2027-01-10 | SDR-2-CON-PW-ZA-3750 SS+3d |  | 8d |
| SDR-2-CON-PW-ZA-2710 |  | Excavation for PW HDPE Pipe 225 mm. Section 2 | 21d | 2027-01-11 | 2027-02-03 | SDR-2-CON-PW-ZA-3770, SDR-2-CON-SL-ZA-3410, SDR-2-CON-SL-ZA-3370, SDR-2-CON-SL-ZA-3330 |  | 19d |
|  | 3 | **bedding Works** |  | 2027-02-17 | 2027-03-18 |  |  |  |
| SDR-2-CON-PW-ZA-2740 |  | Sand bedding for PW HDPE Pipe 225 mm. | 21d | 2027-02-17 | 2027-03-18 | SDR-2-CON-PW-ZA-2710, SDR-2-CON-TS-ZA-2530 FS+4d |  | 8d |
|  | 2 | **Pipes Laying** |  | 2027-03-20 | 2027-04-11 |  |  |  |
| SDR-2-CON-PW-ZA-2720 |  | Install PW 225 mm HDPE Pipe | 20d | 2027-03-20 | 2027-04-11 | SDR-2-CON-PW-ZA-2740 |  | 8d |
|  | 5 | **Testing** |  | 2027-04-20 | 2027-04-28 |  |  |  |
| SDR-2-CON-PW-ZA-2730 |  | Testing of PW HDPE Pipe 225 mm. | 8d | 2027-04-20 | 2027-04-28 | SDR-2-CON-RW-ZA-2270, SDR-2-CON-RW-ZA-2130, SDR-2-CON-RW-ZA-1990, SDR-2-CON-RW-ZA-1850, SDR-2-CON-RW-ZA-1570, SDR-2-CON-RW-ZA-1430, SDR-2-CON-RW-ZA-1290, SDR-2-CON-RW-ZA-1150, SDR-2-CON-PW-ZA-2720 |  | 1d |
|  | 4 | **Backfilling** |  | 2027-04-22 | 2027-05-06 |  |  |  |
| SDR-2-CON-PW-ZA-2750 |  | Backfilling of PW HDPE Pipe 225 mm. | 13d | 2027-04-22 | 2027-05-06 | SDR-2-CON-PW-ZA-2730 SS+2d |  | 1d |
|  | 3 | **Valve Chambers & Valves & Fire Hydrant** |  | 2026-12-17 | 2027-04-19 |  |  |  |
|  | 3 | **Excavation** |  | 2026-12-17 | 2027-02-03 |  |  |  |
| SDR-2-CON-PW-ZA-3780 |  | Excavation for Valve Chambers Section 1 | 21d | 2026-12-17 | 2027-01-10 | SDR-2-CON-PW-ZA-3770 SS |  | 16d |
| SDR-2-CON-PW-ZA-2780 |  | Excavation for Valve Chambers Section 2 | 21d | 2027-01-11 | 2027-02-03 | SDR-2-CON-PW-ZA-3780 |  | 16d |
|  | 1 | **bedding Works** |  | 2027-02-04 | 2027-02-28 |  |  |  |
| SDR-2-CON-PW-ZA-2760 |  | Sand bedding for Valve Chambers | 20d | 2027-02-04 | 2027-02-28 | SDR-2-CON-PW-ZA-2780 |  | 16d |
|  | 4 | **Install Chambers & Valves & Fire Hydrant** |  | 2027-03-01 | 2027-03-27 |  |  |  |
| SDR-2-CON-PW-ZA-2790 |  | Install Chambers & Valves | 19d | 2027-03-01 | 2027-03-27 | SDR-2-CON-PW-ZA-2760 |  | 16d |
|  | 2 | **Testing** |  | 2027-03-28 | 2027-04-05 |  |  |  |
| SDR-2-CON-PW-ZA-2770 |  | Testing for Chambers & Valves | 8d | 2027-03-28 | 2027-04-05 | SDR-2-CON-PW-ZA-2790 |  | 16d |
|  | 6 | **Backfilling** |  | 2027-04-06 | 2027-04-19 |  |  |  |
| SDR-2-CON-PW-ZA-2800 |  | Backfilling for Chambers & Valves | 12d | 2027-04-06 | 2027-04-19 | SDR-2-CON-PW-ZA-2770 |  | 16d |
|  | 3 | **PORTABLE WATER IN ( PH2-A-MCC0 )** |  | 2026-09-24 | 2027-05-15 |  |  |  |
|  | 7 | **Pipes Work** |  | 2026-09-24 | 2027-04-20 |  |  |  |
|  | 1 | **Excavation** |  | 2026-09-24 | 2027-02-03 |  |  |  |
| SDR-2-CON-PW-ZA-3790 |  | Excavation for PW HDPE Pipe 160 mm. Section 1 | 21d | 2026-09-24 A | 2026-10-01 A | SDR-2-CON-PW-ZA-3770 FF | 100% |  |
| SDR-2-CON-PW-ZA-1400 |  | Excavation for PW HDPE Pipe 160 mm. Section 2 | 21d | 2026-10-03 A | 2027-02-03 | SDR-2-CON-PW-ZA-3790 | 10% | 15d |
|  | 3 | **bedding Works** |  | 2027-02-04 | 2027-02-28 |  |  |  |
| SDR-2-CON-PW-ZA-2240 |  | Sand bedding for PW HDPE Pipe 160 mm. | 20d | 2027-02-04 | 2027-02-28 | SDR-2-CON-PW-ZA-1400 |  | 15d |
|  | 2 | **Pipes Laying** |  | 2027-03-01 | 2027-03-28 |  |  |  |
| SDR-2-CON-PW-ZA-1410 |  | Install PW 160 mm HDPE Pipe | 20d | 2027-03-01 | 2027-03-28 | SDR-2-CON-PW-ZA-2240 |  | 15d |
|  | 5 | **Testing** |  | 2027-03-29 | 2027-04-06 |  |  |  |

| ID | WBS | Task | Duration | Start | Finish | Predecessors | Complete | Total float |
| --- | --- | --- | --- | --- | --- | --- | --- | --- |
| SDR-2-CON-PW-ZA-1480 |  | Testing of PW HDPE Pipe 160 mm. | 8d | 2027-03-29 | 2027-04-06 | SDR-2-CON-PW-ZA-1410 |  | 15d |
|  | 4 | **Backfilling** |  | 2027-04-07 | 2027-04-20 |  |  |  |
| SDR-2-CON-PW-ZA-2250 |  | Backfilling of PW HDPE Pipe 160 mm. | 12d | 2027-04-07 | 2027-04-20 | SDR-2-CON-PW-ZA-1480 |  | 15d |
|  | 3 | **Valve Chambers & Valves & Fire Hydrant** |  | 2027-01-11 | 2027-05-15 |  |  |  |
|  | 3 | **Excavation** |  | 2027-01-11 | 2027-03-01 |  |  |  |
| SDR-2-CON-PW-ZA-3800 |  | Excavation for Valve Chambers Section 1 | 21d | 2027-01-11 | 2027-02-03 | SDR-2-CON-PW-ZA-3790 SS |  | 8d |
| SDR-2-CON-PW-ZA-3230 |  | Excavation for Valve Chambers Section 2 | 21d | 2027-02-04 | 2027-03-01 | SDR-2-CON-PW-ZA-3800, SDR-2-CON-SL-ZA-3250 |  | 8d |
|  | 1 | **bedding Works** |  | 2027-03-02 | 2027-03-29 |  |  |  |
| SDR-2-CON-PW-ZA-3210 |  | Sand bedding for Valve Chambers | 20d | 2027-03-02 | 2027-03-29 | SDR-2-CON-PW-ZA-3230 |  | 8d |
|  | 4 | **Install Chambers & Valves & Fire Hydrant** |  | 2027-03-30 | 2027-04-21 |  |  |  |
| SDR-2-CON-PW-ZA-3240 |  | Install Chambers & Valves | 20d | 2027-03-30 | 2027-04-21 | SDR-2-CON-PW-ZA-3210 |  | 8d |
|  | 2 | **Testing** |  | 2027-04-22 | 2027-04-28 |  |  |  |
| SDR-2-CON-PW-ZA-3220 |  | Testing for Chambers & Valves | 6d | 2027-04-22 | 2027-04-28 | SDR-2-CON-PW-ZA-3240 |  | 8d |
|  | 6 | **Backfilling** |  | 2027-04-29 | 2027-05-15 |  |  |  |
| SDR-2-CON-PW-ZA-3250 |  | Backfilling for Chambers & Valves | 14d | 2027-04-29 | 2027-05-15 | SDR-2-CON-PW-ZA-3220 |  | 12d |
|  | 4 | **PORTABLE WATER IN ( PH2-A-MCD0 )** |  | 2026-09-24 | 2027-05-10 |  |  |  |
|  | 7 | **Pipes Work** |  | 2026-09-24 | 2027-04-27 |  |  |  |
|  | 1 | **Excavation** |  | 2026-09-24 | 2027-02-15 |  |  |  |
| SDR-2-CON-PW-ZA-3810 |  | Excavation for PW HDPE Pipe 160 mm. Section 1 | 21d | 2026-09-24 A | 2026-10-01 A | SDR-2-CON-TS-ZA-1270 SS, SDR-2-CON-PW-ZA-3790 FF, SDR-2-CON-SL-ZA-3290 | 100% |  |
| SDR-2-CON-PW-ZA-3260 |  | Excavation for PW HDPE Pipe 160 mm. Section 2 | 21d | 2026-10-05 A | 2027-02-15 | SDR-2-CON-PW-ZA-3810, SDR-2-CON-TE-ZA-4170, SDR-2-CON-TE-ZA-4180, SDR-2-CON-TE-ZA-4080, SDR-2-CON-TE-ZA-4090, SDR-2-CON-TE-ZA-3990, SDR-2-CON-TE-ZA-4000, SDR-2-CON-TE-ZA-3900, SDR-2-CON-TE-ZA-3910, SDR-2-CON-TE-ZA-3810, SDR-2-CON-TE-ZA-3820, SDR-2-CON-TE-ZA-3720 | 10% | 9d |
|  | 3 | **bedding Works** |  | 2027-02-16 | 2027-03-14 |  |  |  |
| SDR-2-CON-PW-ZA-3290 |  | Sand bedding for PW HDPE Pipe 160 mm. | 18d | 2027-02-16 | 2027-03-14 | SDR-2-CON-PW-ZA-3260 |  | 9d |
|  | 2 | **Pipes Laying** |  | 2027-03-15 | 2027-04-06 |  |  |  |
| SDR-2-CON-PW-ZA-3270 |  | Install PW 160 mm HDPE Pipe | 20d | 2027-03-15 | 2027-04-06 | SDR-2-CON-PW-ZA-3290 |  | 9d |
|  | 5 | **Testing** |  | 2027-04-07 | 2027-04-15 |  |  |  |
| SDR-2-CON-PW-ZA-3280 |  | Testing of PW HDPE Pipe 160 mm. | 8d | 2027-04-07 | 2027-04-15 | SDR-2-CON-PW-ZA-3270 |  | 9d |
|  | 4 | **Backfilling** |  | 2027-04-17 | 2027-04-27 |  |  |  |
| SDR-2-CON-PW-ZA-3300 |  | Backfilling of PW HDPE Pipe 160 mm. | 10d | 2027-04-17 | 2027-04-27 | SDR-2-CON-PW-ZA-3280 |  | 9d |
|  | 3 | **Valve Chambers & Valves & Fire Hydrant** |  | 2027-01-11 | 2027-05-10 |  |  |  |
|  | 3 | **Excavation** |  | 2027-01-11 | 2027-03-01 |  |  |  |
| SDR-2-CON-PW-ZA-3820 |  | Excavation for Valve Chambers Section 1 | 21d | 2027-01-11 | 2027-02-03 | SDR-2-CON-PW-ZA-3810 SS |  | 8d |
| SDR-2-CON-PW-ZA-3330 |  | Excavation for Valve Chambers Section 2 | 21d | 2027-02-04 | 2027-03-01 | SDR-2-CON-PW-ZA-3820, SDR-2-CON-CC-ZA-1780, SDR-2-CON-TE-ZA-3630 |  | 8d |
|  | 1 | **bedding Works** |  | 2027-03-02 | 2027-03-27 |  |  |  |
| SDR-2-CON-PW-ZA-3310 |  | Sand bedding for Valve Chambers | 18d | 2027-03-02 | 2027-03-27 | SDR-2-CON-PW-ZA-3330 |  | 8d |
|  | 4 | **Install Chambers & Valves & Fire Hydrant** |  | 2027-03-28 | 2027-04-19 |  |  |  |
| SDR-2-CON-PW-ZA-3340 |  | Install Chambers & Valves | 20d | 2027-03-28 | 2027-04-19 | SDR-2-CON-PW-ZA-3310 |  | 8d |
|  | 2 | **Testing** |  | 2027-04-20 | 2027-04-28 |  |  |  |
| SDR-2-CON-PW-ZA-3320 |  | Testing for Chambers & Valves | 8d | 2027-04-20 | 2027-04-28 | SDR-2-CON-PW-ZA-3340 |  | 8d |
|  | 6 | **Backfilling** |  | 2027-04-29 | 2027-05-10 |  |  |  |
| SDR-2-CON-PW-ZA-3350 |  | Backfilling for Chambers & Valves | 10d | 2027-04-29 | 2027-05-10 | SDR-2-CON-PW-ZA-3320 |  | 8d |
|  | 5 | **PORTABLE WATER IN ( PH2-A-MCE0 )** |  | 2026-09-07 | 2027-05-13 |  |  |  |
|  | 7 | **Pipes Work** |  | 2026-09-07 | 2027-02-03 |  |  |  |
|  | 1 | **Excavation** |  | 2026-09-07 | 2026-11-30 |  |  |  |
| SDR-2-CON-PW-ZA-3830 |  | Excavation for PW HDPE Pipe 160 mm. Section 1 | 21d | 2026-09-07 A | 2026-09-14 A | SDR-2-CON-TE-ZA-4540 SS, SDR-2-CON-TE-ZA-4360 SS | 100% |  |
| SDR-2-CON-PW-ZA-3360 |  | Excavation for PW HDPE Pipe 160 mm. Section 2 | 21d | 2026-10-05 A | 2026-11-30 | SDR-2-CON-PW-ZA-3830, SDR-2-CON-TE-ZA-4440, SDR-2-CON-TE-ZA-4450 | 10% | 75d |
|  | 3 | **bedding Works** |  | 2026-12-01 | 2026-12-21 |  |  |  |
| SDR-2-CON-PW-ZA-3390 |  | Sand bedding for PW HDPE Pipe 160 mm. | 18d | 2026-12-01 | 2026-12-21 | SDR-2-CON-PW-ZA-3360 |  | 75d |
|  | 2 | **Pipes Laying** |  | 2026-12-22 | 2027-01-07 |  |  |  |
| SDR-2-CON-PW-ZA-3370 |  | Install PW 160 mm HDPE Pipe | 15d | 2026-12-22 | 2027-01-07 | SDR-2-CON-PW-ZA-3390 |  | 75d |
|  | 5 | **Testing** |  | 2027-01-09 | 2027-01-17 |  |  |  |
| SDR-2-CON-PW-ZA-3380 |  | Testing of PW HDPE Pipe 160 mm. | 8d | 2027-01-09 | 2027-01-17 | SDR-2-CON-PW-ZA-3370 |  | 75d |
|  | 4 | **Backfilling** |  | 2027-01-18 | 2027-02-03 |  |  |  |
| SDR-2-CON-PW-ZA-3400 |  | Backfilling of PW HDPE Pipe 160 mm. | 15d | 2027-01-18 | 2027-02-03 | SDR-2-CON-PW-ZA-3380 |  | 75d |
|  | 3 | **Valve Chambers & Valves & Fire Hydrant** |  | 2026-10-05 | 2027-05-13 |  |  |  |
|  | 3 | **Excavation** |  | 2026-10-05 | 2027-03-02 |  |  |  |
| SDR-2-CON-PW-ZA-3840 |  | Excavation for Valve Chambers Section 1 | 20d | 2026-10-05 | 2026-10-27 | SDR-2-CON-PW-ZA-3830 SS |  | 100d |
| SDR-2-CON-PW-ZA-3430 |  | Excavation for Valve Chambers Section 2 | 20d | 2027-02-06 | 2027-03-02 | SDR-2-CON-PW-ZA-3840, SDR-2-CON-TE-ZA-3450, SDR-2-CON-TE-ZA-3360 |  | 13.81d |
|  | 1 | **bedding Works** |  | 2027-03-02 | 2027-03-28 |  |  |  |
| SDR-2-CON-PW-ZA-3410 |  | Sand bedding for Valve Chambers | 18d | 2027-03-02 | 2027-03-28 | SDR-2-CON-PW-ZA-3430 |  | 13.81d |
|  | 4 | **Install Chambers & Valves & Fire Hydrant** |  | 2027-03-28 | 2027-04-17 |  |  |  |
| SDR-2-CON-PW-ZA-3440 |  | Install Chambers & Valves | 17d | 2027-03-28 | 2027-04-17 | SDR-2-CON-PW-ZA-3410 |  | 13.81d |
|  | 2 | **Testing** |  | 2027-04-17 | 2027-04-26 |  |  |  |
| SDR-2-CON-PW-ZA-3420 |  | Testing for Chambers & Valves | 8d | 2027-04-17 | 2027-04-26 | SDR-2-CON-PW-ZA-3440 |  | 13.81d |
|  | 6 | **Backfilling** |  | 2027-04-26 | 2027-05-13 |  |  |  |
| SDR-2-CON-PW-ZA-3450 |  | Backfilling for Chambers & Valves | 15d | 2027-04-26 | 2027-05-13 | SDR-2-CON-PW-ZA-3420 |  | 13.81d |
|  | 6 | **PORTABLE WATER IN ( PH2-A-MCF0 )** |  | 2026-12-29 | 2027-04-27 |  |  |  |
|  | 7 | **Pipes Work** |  | 2026-12-29 | 2027-04-27 |  |  |  |
|  | 1 | **Excavation** |  | 2026-12-29 | 2027-02-15 |  |  |  |
| SDR-2-CON-PW-ZA-3850 |  | Excavation for PW HDPE Pipe 160 mm. Section 1 | 21d | 2026-12-29 | 2027-01-21 | SDR-2-CON-PW-ZA-3830 SS+3d, SDR-2-CON-TE-ZA-3540, SDR-2-CON-TE-ZA-3550, SDR-2-CON-TE-ZA-3460, SDR-2-CON-TE-ZA-3370, SDR-2-CON-TE-ZA-3270 |  | 4d |
| SDR-2-CON-PW-ZA-3460 |  | Excavation for PW HDPE Pipe 160 mm. Section 2 | 21d | 2027-01-23 | 2027-02-15 | SDR-2-CON-PW-ZA-3850 |  | 9d |

| ID | WBS | Task | Duration | Start | Finish | Predecessors | Total float |
| --- | --- | --- | --- | --- | --- | --- | --- |
|  | 3 | **bedding Works** |  | 2027-02-16 | 2027-03-14 |  |  |
| SDR-2-CON-PW-ZA-3490 |  | Sand bedding for PW HDPE Pipe 160 mm. | 18d | 2027-02-16 | 2027-03-14 | SDR-2-CON-PW-ZA-3460 | 9d |
|  | 2 | **Pipes Laying** |  | 2027-03-15 | 2027-04-06 |  |  |
| SDR-2-CON-PW-ZA-3470 |  | Install PW 160 mm HDPE Pipe | 20d | 2027-03-15 | 2027-04-06 | SDR-2-CON-PW-ZA-3490 | 9d |
|  | 5 | **Testing** |  | 2027-04-07 | 2027-04-13 |  |  |
| SDR-2-CON-PW-ZA-3480 |  | Testing of PW HDPE Pipe 160 mm. | 6d | 2027-04-07 | 2027-04-13 | SDR-2-CON-PW-ZA-3470 | 9d |
|  | 4 | **Backfilling** |  | 2027-04-14 | 2027-04-27 |  |  |
| SDR-2-CON-PW-ZA-3500 |  | Backfilling of PW HDPE Pipe 160 mm. | 12d | 2027-04-14 | 2027-04-27 | SDR-2-CON-PW-ZA-3480 | 9d |
|  | 3 | **Valve Chambers & Valves & Fire Hydrant** |  | 2026-12-29 | 2027-04-27 |  |  |
|  | 3 | **Excavation** |  | 2026-12-29 | 2027-02-15 |  |  |
| SDR-2-CON-PW-ZA-3860 |  | Excavation for Valve Chambers Section 1 | 21d | 2026-12-29 | 2027-01-21 | SDR-2-CON-PW-ZA-3850 SS | 9d |
| SDR-2-CON-PW-ZA-3530 |  | Excavation for Valve Chambers Section 2 | 21d | 2027-01-23 | 2027-02-15 | SDR-2-CON-PW-ZA-3860 | 9d |
|  | 1 | **bedding Works** |  | 2027-02-16 | 2027-03-14 |  |  |
| SDR-2-CON-PW-ZA-3510 |  | Sand bedding for Valve Chambers | 18d | 2027-02-16 | 2027-03-14 | SDR-2-CON-PW-ZA-3530 | 9d |
|  | 4 | **Install Chambers & Valves & Fire Hydrant** |  | 2027-03-15 | 2027-04-06 |  |  |
| SDR-2-CON-PW-ZA-3540 |  | Install Chambers & Valves | 20d | 2027-03-15 | 2027-04-06 | SDR-2-CON-PW-ZA-3510 | 9d |
|  | 2 | **Testing** |  | 2027-04-07 | 2027-04-14 |  |  |
| SDR-2-CON-PW-ZA-3520 |  | Testing for Chambers & Valves | 7d | 2027-04-07 | 2027-04-14 | SDR-2-CON-PW-ZA-3540 | 9d |
|  | 6 | **Backfilling** |  | 2027-04-15 | 2027-04-27 |  |  |
| SDR-2-CON-PW-ZA-3550 |  | Backfilling for Chambers & Valves | 11d | 2027-04-15 | 2027-04-27 | SDR-2-CON-PW-ZA-3520 | 9d |
|  | 7 | **PORTABLE WATER IN ( PH2-A-MCG0 )** |  | 2027-01-02 | 2027-05-09 |  |  |
|  | 7 | **Pipes Work** |  | 2027-01-02 | 2027-04-29 |  |  |
|  | 1 | **Excavation** |  | 2027-01-02 | 2027-02-18 |  |  |
| SDR-2-CON-PW-ZA-3870 |  | Excavation for PW HDPE Pipe 160 mm. Section 1 | 21d | 2027-01-02 | 2027-01-25 | SDR-2-CON-PW-ZA-3850 SS+3d | 4d |
| SDR-2-CON-PW-ZA-3560 |  | Excavation for PW HDPE Pipe 160 mm. Section 2 | 21d | 2027-01-26 | 2027-02-18 | SDR-2-CON-PW-ZA-3870 | 7d |
|  | 3 | **bedding Works** |  | 2027-02-20 | 2027-03-20 |  |  |
| SDR-2-CON-PW-ZA-3590 |  | Sand bedding for PW HDPE Pipe 160 mm. | 20d | 2027-02-20 | 2027-03-20 | SDR-2-CON-PW-ZA-3560 | 7d |
|  | 2 | **Pipes Laying** |  | 2027-03-21 | 2027-04-05 |  |  |
| SDR-2-CON-PW-ZA-3570 |  | Install PW 160 mm HDPE Pipe | 14d | 2027-03-21 | 2027-04-05 | SDR-2-CON-PW-ZA-3590 | 7d |
|  | 5 | **Testing** |  | 2027-04-06 | 2027-04-14 |  |  |
| SDR-2-CON-PW-ZA-3580 |  | Testing of PW HDPE Pipe 160 mm. | 8d | 2027-04-06 | 2027-04-14 | SDR-2-CON-PW-ZA-3570 | 7d |
|  | 4 | **Backfilling** |  | 2027-04-15 | 2027-04-29 |  |  |
| SDR-2-CON-PW-ZA-3600 |  | Backfilling of PW HDPE Pipe 160 mm. | 13d | 2027-04-15 | 2027-04-29 | SDR-2-CON-PW-ZA-3580 | 7d |
|  | 3 | **Valve Chambers & Valves & Fire Hydrant** |  | 2027-01-11 | 2027-05-09 |  |  |
|  | 3 | **Excavation** |  | 2027-01-11 | 2027-03-01 |  |  |
| SDR-2-CON-PW-ZA-3880 |  | Excavation for Valve Chambers Section 1 | 21d | 2027-01-11 | 2027-02-03 | SDR-2-CON-PW-ZA-3870 SS, SDR-2-CON-ST-ZA-4650 | 17d |
| SDR-2-CON-PW-ZA-3630 |  | Excavation for Valve Chambers Section 2 | 21d | 2027-02-04 | 2027-03-01 | SDR-2-CON-PW-ZA-3880, SDR-2-CON-PW-ZA-3560 SS | 17d |
|  | 1 | **bedding Works** |  | 2027-03-02 | 2027-03-29 |  |  |
| SDR-2-CON-PW-ZA-3610 |  | Sand bedding for Valve Chambers | 20d | 2027-03-02 | 2027-03-29 | SDR-2-CON-PW-ZA-3630 | 17d |
|  | 4 | **Install Chambers & Valves & Fire Hydrant** |  | 2027-03-30 | 2027-04-18 |  |  |
| SDR-2-CON-PW-ZA-3640 |  | Install Chambers & Valves | 17d | 2027-03-30 | 2027-04-18 | SDR-2-CON-PW-ZA-3610 | 17d |
|  | 2 | **Testing** |  | 2027-04-19 | 2027-04-27 |  |  |
| SDR-2-CON-PW-ZA-3620 |  | Testing for Chambers & Valves | 8d | 2027-04-19 | 2027-04-27 | SDR-2-CON-PW-ZA-3640 | 17d |
|  | 6 | **Backfilling** |  | 2027-04-28 | 2027-05-09 |  |  |
| SDR-2-CON-PW-ZA-3650 |  | Backfilling for Chambers & Valves | 10d | 2027-04-28 | 2027-05-09 | SDR-2-CON-PW-ZA-3620 | 17d |
|  | 8 | **PORTABLE WATER IN ( PH2-A-MCH0 )** |  | 2027-01-05 | 2027-05-02 |  |  |
|  | 7 | **Pipes Work** |  | 2027-01-05 | 2027-05-02 |  |  |
|  | 1 | **Excavation** |  | 2027-01-05 | 2027-02-23 |  |  |
| SDR-2-CON-PW-ZA-3890 |  | Excavation for PW HDPE Pipe 225 mm. Section 1 | 21d | 2027-01-05 | 2027-01-28 | SDR-2-CON-PW-ZA-3870 SS+3d | 4d |
| SDR-2-CON-PW-ZA-2810 |  | Excavation for PW HDPE Pipe 225 mm. Section 2 | 21d | 2027-01-30 | 2027-02-23 | SDR-2-CON-PW-ZA-3890 | 5d |
|  | 3 | **bedding Works** |  | 2027-02-24 | 2027-03-23 |  |  |
| SDR-2-CON-PW-ZA-2840 |  | Sand bedding for PW HDPE Pipe 225 mm. | 20d | 2027-02-24 | 2027-03-23 | SDR-2-CON-PW-ZA-2810 | 5d |
|  | 2 | **Pipes Laying** |  | 2027-03-24 | 2027-04-10 |  |  |
| SDR-2-CON-PW-ZA-2820 |  | Install PW 225 mm HDPE Pipe | 15d | 2027-03-24 | 2027-04-10 | SDR-2-CON-PW-ZA-2840 | 5d |
|  | 5 | **Testing** |  | 2027-04-11 | 2027-04-18 |  |  |
| SDR-2-CON-PW-ZA-2830 |  | Testing of PW HDPE Pipe 225 mm. | 7d | 2027-04-11 | 2027-04-18 | SDR-2-CON-PW-ZA-2820 | 5d |
|  | 4 | **Backfilling** |  | 2027-04-19 | 2027-05-02 |  |  |
| SDR-2-CON-PW-ZA-2850 |  | Backfilling of PW HDPE Pipe 225 mm. | 12d | 2027-04-19 | 2027-05-02 | SDR-2-CON-PW-ZA-2830 | 5d |
|  | 3 | **Valve Chambers & Valves & Fire Hydrant** |  | 2027-01-05 | 2027-05-02 |  |  |
|  | 3 | **Excavation** |  | 2027-01-05 | 2027-02-23 |  |  |
| SDR-2-CON-PW-ZA-3900 |  | Excavation for Valve Chambers Section 1 | 21d | 2027-01-05 | 2027-01-28 | SDR-2-CON-PW-ZA-3890 SS, SDR-2-CON-RW-ZA-2510 | 5d |
| SDR-2-CON-PW-ZA-2880 |  | Excavation for Valve Chambers Section 2 | 21d | 2027-01-30 | 2027-02-23 | SDR-2-CON-PW-ZA-3900 | 5d |
|  | 1 | **bedding Works** |  | 2027-02-24 | 2027-03-23 |  |  |
| SDR-2-CON-PW-ZA-2860 |  | Sand bedding for Valve Chambers | 20d | 2027-02-24 | 2027-03-23 | SDR-2-CON-PW-ZA-2880 | 5d |
|  | 4 | **Install Chambers & Valves & Fire Hydrant** |  | 2027-03-24 | 2027-04-10 |  |  |
| SDR-2-CON-PW-ZA-2890 |  | Install Chambers & Valves | 15d | 2027-03-24 | 2027-04-10 | SDR-2-CON-PW-ZA-2860 | 5d |
|  | 2 | **Testing** |  | 2027-04-11 | 2027-04-18 |  |  |
| SDR-2-CON-PW-ZA-2870 |  | Testing for Chambers & Valves | 7d | 2027-04-11 | 2027-04-18 | SDR-2-CON-RW-ZA-2550, SDR-2-CON-PW-ZA-2890 | 5d |
|  | 6 | **Backfilling** |  | 2027-04-19 | 2027-05-02 |  |  |
| SDR-2-CON-PW-ZA-2900 |  | Backfilling for Chambers & Valves | 12d | 2027-04-19 | 2027-05-02 | SDR-2-CON-PW-ZA-2870 | 5d |

| ID | WBS | Task | Duration | Start | Finish | Predecessors | Complete | Total float |
| --- | --- | --- | --- | --- | --- | --- | --- | --- |
|  | 9 | **PORTABLE WATER IN ( PH2-ART-MC00 )** |  | 2026-09-14 | 2027-05-03 |  |  |  |
|  | 7 | **Pipes Work** |  | 2026-09-14 | 2027-04-08 |  |  |  |
|  | 1 | **Excavation** |  | 2026-09-14 | 2027-02-01 |  |  |  |
| SDR-2-CON-PW-ZA-3910 |  | Excavation for PW HDPE Pipes 315 mm Section 1 | 21d | 2026-09-14 A | 2026-09-30 A | SDR-2-CON-PW-ZA-3890 SS+3d | 100% |  |
| SDR-2-CON-PW-ZA-2360 |  | Excavation for PW HDPE Pipes 315 mm Section 2 | 21d | 2026-10-01 A | 2027-02-01 | SDR-2-CON-PW-ZA-3910 | 25% | 25d |
|  | 8 | **bedding Works** |  | 2027-02-02 | 2027-02-25 |  |  |  |
| SDR-2-CON-PW-ZA-2440 |  | Sand bedding for PW HDPE Pipes 315 mm | 20d | 2027-02-02 | 2027-02-25 | SDR-2-CON-PW-ZA-2360 |  | 25d |
|  | 2 | **Pipes Laying** |  | 2027-02-27 | 2027-03-22 |  |  |  |
| SDR-2-CON-PW-ZA-2370 |  | Install PW 315 mm HDPE Pipe | 17d | 2027-02-27 | 2027-03-22 | SDR-2-CON-RW-ZA-2690, SDR-2-CON-PW-ZA-2440 |  | 25d |
|  | 5 | **Testing** |  | 2027-03-23 | 2027-03-30 |  |  |  |
| SDR-2-CON-PW-ZA-2430 |  | Testing of PW HDPE Pipe 315 mm. | 7d | 2027-03-23 | 2027-03-30 | SDR-2-CON-PW-ZA-2370 |  | 25d |
|  | 9 | **Backfilling** |  | 2027-03-31 | 2027-04-08 |  |  |  |
| SDR-2-CON-PW-ZA-2450 |  | Backfilling of PW HDPE Pipe 315 mm. | 8d | 2027-03-31 | 2027-04-08 | SDR-2-CON-PW-ZA-2430 |  | 25d |
|  | 3 | **Valve Chambers & Valves & Fire Hydrant** |  | 2027-01-09 | 2027-05-03 |  |  |  |
|  | 3 | **Excavation** |  | 2027-01-09 | 2027-02-27 |  |  |  |
| SDR-2-CON-PW-ZA-3920 |  | Excavation for Valve Chambers Section 1 | 21d | 2027-01-09 | 2027-02-01 | SDR-2-CON-PW-ZA-3910 SS |  | 4d |
| SDR-2-CON-PW-ZA-2400 |  | Excavation for Valve Chambers Section 2 | 21d | 2027-02-02 | 2027-02-27 | SDR-2-CON-PW-ZA-3920 |  | 4d |
|  | 1 | **bedding Works** |  | 2027-02-28 | 2027-03-27 |  |  |  |
| SDR-2-CON-PW-ZA-2380 |  | Sand bedding for Valve Chambers | 20d | 2027-02-28 | 2027-03-27 | SDR-2-CON-PW-ZA-2400 |  | 4d |
|  | 4 | **Install Chambers & Valves & Fire Hydrant** |  | 2027-03-28 | 2027-04-14 |  |  |  |
| SDR-2-CON-PW-ZA-2410 |  | Install Chambers & Valves | 16d | 2027-03-28 | 2027-04-14 | SDR-2-CON-PW-ZA-2380 |  | 4d |
|  | 2 | **Testing** |  | 2027-04-15 | 2027-04-24 |  |  |  |
| SDR-2-CON-PW-ZA-2390 |  | Testing for Chambers & Valves | 8d | 2027-04-15 | 2027-04-24 | SDR-2-CON-PW-ZA-2410 |  | 4d |
|  | 6 | **Backfilling** |  | 2027-04-25 | 2027-05-03 |  |  |  |
| SDR-2-CON-PW-ZA-2420 |  | Backfilling for Chambers & Valves | 8d | 2027-04-25 | 2027-05-03 | SDR-2-CON-PW-ZA-2390 |  | 4d |
|  | 10 | **PORTABLE WATER IN ( PH2-ART-MC10 )** |  | 2026-10-03 | 2027-05-10 |  |  |  |
|  | 7 | **Pipes Work** |  | 2026-10-03 | 2027-05-10 |  |  |  |
|  | 1 | **Excavation** |  | 2027-01-09 | 2027-02-01 |  |  |  |
| SDR-2-CON-PW-ZA-2460 |  | Excavation for PW HDPE Pipes 315 mm Section 2 | 21d | 2027-01-09 | 2027-02-01 | SDR-2-CON-PW-ZA-3930 |  | 35d |
| SDR-2-CON-PW-ZA-3930 |  | Excavation for PW HDPE Pipes 315 mm Section 1 | 21d | 2027-09-24 A | 2027-01-07 | SDR-2-CON-PW-ZA-3910 FF+2d | 35% | 25d |
|  | 8 | **bedding Works** |  | 2027-02-02 | 2027-02-25 |  |  |  |
| SDR-2-CON-PW-ZA-2540 |  | Sand bedding for PW HDPE Pipes 315 mm | 20d | 2027-02-02 | 2027-02-25 | SDR-2-CON-PW-ZA-2460 |  | 35d |
|  | 2 | **Pipes Laying** |  | 2026-10-03 | 2027-03-20 |  |  |  |
| SDR-2-CON-PW-ZA-2470 |  | Install PW 315 mm HDPE Pipe | 15d | 2026-10-03 A | 2027-03-20 | SDR-2-CON-PW-ZA-2540 | 15% | 35d |
|  | 5 | **Testing** |  | 2027-03-21 | 2027-03-28 |  |  |  |
| SDR-2-CON-PW-ZA-2530 |  | Testing of PW HDPE Pipe 315 mm. | 7d | 2027-03-21 | 2027-03-28 | SDR-2-CON-PW-ZA-2470 |  | 35d |
|  | 9 | **Backfilling** |  | 2027-04-29 | 2027-05-10 |  |  |  |
| SDR-2-CON-PW-ZA-2550 |  | Backfilling of PW HDPE Pipe 315 mm. | 10d | 2027-04-29 | 2027-05-10 | SDR-2-CON-PW-ZA-2230, SDR-2-CON-PW-ZA-2530 |  | 16d |
|  | 3 | **Valve Chambers & Valves & Fire Hydrant** |  | 2027-01-05 | 2027-05-01 |  |  |  |
|  | 3 | **Excavation** |  | 2027-01-05 | 2027-02-24 |  |  |  |
| SDR-2-CON-PW-ZA-3940 |  | Excavation for Valve Chambers Section 1 | 21d | 2027-01-05 | 2027-01-30 | SDR-2-CON-PW-ZA-3930 SS, SDR-2-CON-TE-ZA-1060, SDR-2-CON-MV-ZA-1260, SDR-2-CON-MV-ZA-1220 |  | 6.74d |
| SDR-2-CON-PW-ZA-2500 |  | Excavation for Valve Chambers Section 2 | 21d | 2027-01-30 | 2027-02-24 | SDR-2-CON-PW-ZA-3940 |  | 6.74d |
|  | 1 | **bedding Works** |  | 2027-02-24 | 2027-03-24 |  |  |  |
| SDR-2-CON-PW-ZA-2480 |  | Sand bedding for Valve Chambers | 20d | 2027-02-24 | 2027-03-24 | SDR-2-CON-PW-ZA-2500 |  | 6.74d |
|  | 4 | **Install Chambers & Valves & Fire Hydrant** |  | 2027-03-24 | 2027-04-10 |  |  |  |
| SDR-2-CON-PW-ZA-2510 |  | Install Chambers & Valves | 14d | 2027-03-24 | 2027-04-10 | SDR-2-CON-PW-ZA-2480 |  | 6.74d |
|  | 2 | **Testing** |  | 2027-04-10 | 2027-04-19 |  |  |  |
| SDR-2-CON-PW-ZA-2490 |  | Testing for Chambers & Valves | 8d | 2027-04-10 | 2027-04-19 | SDR-2-CON-PW-ZA-2510 |  | 6.74d |
|  | 6 | **Backfilling** |  | 2027-04-19 | 2027-05-01 |  |  |  |
| SDR-2-CON-PW-ZA-2520 |  | Backfilling for Chambers & Valves | 10d | 2027-04-19 | 2027-05-01 | SDR-2-CON-PW-ZA-2490 |  | 6.74d |
|  | ZG | **ZONE G** |  | 2026-05-06 | 2027-04-25 |  |  |  |
|  | 1 | **PORTABLE WATER IN ( PH2-G-MCA0 )** |  | 2026-05-06 | 2027-01-24 |  |  |  |
|  | 7 | **Pipes Work** |  | 2026-05-06 | 2026-10-31 |  |  |  |
|  | 1 | **Excavation** |  | 2026-05-06 | 2026-08-20 |  |  |  |
| SDR-2-CON-PW-ZG-1520 |  | Excavation for PW HDPE Pipes 400 mm Section 1 | 21d | 2026-05-06 A | 2026-05-24 A | SDR-2-CON-TS-ZA-2300 SS | 100% |  |
| SDR-2-CON-PW-ZG-1000 |  | Excavation for PW HDPE Pipes 400 mm Section 2 | 21d | 2026-06-22 A | 2026-08-20 A | SDR-2-CON-PW-ZG-1520 | 100% |  |
|  | 3 | **bedding Works** |  | 2026-08-01 | 2026-10-05 |  |  |  |
| SDR-2-CON-PW-ZG-1500 |  | Sand bedding for PW HDPE Pipes 400 mm | 16d | 2026-08-01 A | 2026-10-05 | SDR-2-CON-PW-ZG-1000 | 92% | 157d |
|  | 2 | **Pipes Laying** |  | 2026-08-13 | 2026-10-05 |  |  |  |
| SDR-2-CON-PW-ZG-1010 |  | Install PW 400 mm HDPE Pipe | 16d | 2026-08-13 A | 2026-10-05 | SDR-2-CON-PW-ZG-1500 FF | 92% | 157d |
|  | 5 | **Testing** |  | 2026-10-06 | 2026-10-17 |  |  |  |
| SDR-2-CON-PW-ZG-1080 |  | Testing of PW HDPE Pipe 400 mm. | 10d | 2026-10-06 | 2026-10-17 | SDR-2-CON-PW-ZG-1010 |  | 157d |
|  | 4 | **Backfilling** |  | 2026-10-18 | 2026-10-31 |  |  |  |
| SDR-2-CON-PW-ZG-1510 |  | Backfilling of PW HDPE Pipe 400 mm. | 12d | 2026-10-18 | 2026-10-31 | SDR-2-CON-PW-ZG-1080 |  | 157d |
|  | 3 | **Valve Chambers & Valves & Fire Hydrant** |  | 2026-10-05 | 2027-01-24 |  |  |  |
|  | 3 | **Excavation** |  | 2026-10-05 | 2026-11-22 |  |  |  |
| SDR-2-CON-PW-ZA-3950 |  | Excavation for Valve Chambers Section 1 | 21d | 2026-10-05 | 2026-10-28 | SDR-2-CON-PW-ZG-1520 SS |  | 84d |
| SDR-2-CON-PW-ZA-3680 |  | Excavation for Valve Chambers Section 2 | 21d | 2026-10-29 | 2026-11-22 | SDR-2-CON-PW-ZA-3950 |  | 84d |
|  | 1 | **bedding Works** |  | 2026-11-23 | 2026-12-13 |  |  |  |
| SDR-2-CON-PW-ZA-3660 |  | Sand bedding for Valve Chambers | 18d | 2026-11-23 | 2026-12-13 | SDR-2-CON-PW-ZA-3680 |  | 84d |

| ID | WBS | Task | Duration | Start | Finish | Predecessors | Complete | Total float |
| --- | --- | --- | --- | --- | --- | --- | --- | --- |
|  | 4 | **Install Chambers & Valves & Fire Hydrant** |  | 2026-12-14 | 2026-12-31 |  |  |  |
| SDR-2-CON-PW-ZA-3690 |  | Install Chambers & Valves | 16d | 2026-12-14 | 2026-12-31 | SDR-2-CON-PW-ZA-3660 |  | 84d |
|  | 2 | **Testing** |  | 2027-01-02 | 2027-01-12 |  |  |  |
| SDR-2-CON-PW-ZA-3670 |  | Testing for Chambers & Valves | 10d | 2027-01-02 | 2027-01-12 | SDR-2-CON-PW-ZA-3690 |  | 84d |
|  | 6 | **Backfilling** |  | 2027-01-13 | 2027-01-24 |  |  |  |
| SDR-2-CON-PW-ZA-3700 |  | Backfilling for Chambers & Valves | 10d | 2027-01-13 | 2027-01-24 | SDR-2-CON-PW-ZA-3670 |  | 84d |
|  | 2 | **PORTABLE WATER IN ( PH2-G-MCE0 )** |  | 2026-07-07 | 2027-04-25 |  |  |  |
|  | 7 | **Pipes Work** |  | 2026-07-07 | 2026-10-28 |  |  |  |
|  | 1 | **Excavation** |  | 2026-07-07 | 2026-08-16 |  |  |  |
| SDR-2-CON-PW-ZA-3960 |  | Excavation for PW HDPE Pipe 225 mm. Section 1 | 21d | 2026-07-07 A | 2026-07-14 A | SDR-2-CON-TS-ZA-2400 SS | 100% |  |
| SDR-2-CON-PW-ZA-2910 |  | Excavation for PW HDPE Pipe 225 mm. Section 2 | 21d | 2026-07-19 A | 2026-08-16 A | SDR-2-CON-PW-ZA-3960 | 100% |  |
|  | 3 | **bedding Works** |  | 2026-08-26 | 2026-10-05 |  |  |  |
| SDR-2-CON-PW-ZA-2940 |  | Sand bedding for PW HDPE Pipe 225 mm. | 18d | 2026-08-26 A | 2026-10-05 | SDR-2-CON-PW-ZA-2910 | 45% | 159d |
|  | 2 | **Pipes Laying** |  | 2026-08-13 | 2026-10-05 |  |  |  |
| SDR-2-CON-PW-ZA-2920 |  | Install PW 225 mm HDPE Pipe | 18d | 2026-08-13 A | 2026-10-05 | SDR-2-CON-PW-ZA-2940 FF | 98% | 159d |
|  | 5 | **Testing** |  | 2026-10-06 | 2026-10-13 |  |  |  |
| SDR-2-CON-PW-ZA-2930 |  | Testing of PW HDPE Pipe 225 mm. | 7d | 2026-10-06 | 2026-10-13 | SDR-2-CON-PW-ZA-2920 |  | 159d |
|  | 4 | **Backfilling** |  | 2026-10-14 | 2026-10-28 |  |  |  |
| SDR-2-CON-PW-ZA-2950 |  | Backfilling of PW HDPE Pipe 225 mm. | 13d | 2026-10-14 | 2026-10-28 | SDR-2-CON-PW-ZA-2930 |  | 159d |
|  | 3 | **Valve Chambers & Valves & Fire Hydrant** |  | 2026-12-26 | 2027-04-25 |  |  |  |
|  | 3 | **Excavation** |  | 2026-12-26 | 2027-02-11 |  |  |  |
| SDR-2-CON-PW-ZA-3970 |  | Excavation for Valve Chambers Section 1 | 21d | 2026-12-26 | 2027-01-18 | SDR-2-CON-PW-ZA-3960 SS, SDR-2-CON-TE-ZA-3370 |  | 23d |
| SDR-2-CON-PW-ZA-2980 |  | Excavation for Valve Chambers Section 2 | 21d | 2027-01-19 | 2027-02-11 | SDR-2-CON-PW-ZA-3970 |  | 23d |
|  | 1 | **bedding Works** |  | 2027-02-13 | 2027-03-06 |  |  |  |
| SDR-2-CON-PW-ZA-2960 |  | Sand bedding for Valve Chambers | 18d | 2027-02-13 | 2027-03-06 | SDR-2-CON-PW-ZA-2980 |  | 23d |
|  | 4 | **Install Chambers & Valves & Fire Hydrant** |  | 2027-03-07 | 2027-03-30 |  |  |  |
| SDR-2-CON-PW-ZA-2990 |  | Install Chambers & Valves | 17d | 2027-03-07 | 2027-03-30 | SDR-2-CON-PW-ZA-2960 |  | 23d |
|  | 2 | **Testing** |  | 2027-03-31 | 2027-04-11 |  |  |  |
| SDR-2-CON-PW-ZA-2970 |  | Testing for Chambers & Valves | 10d | 2027-03-31 | 2027-04-11 | SDR-2-CON-PW-ZA-2990 |  | 23d |
|  | 6 | **Backfilling** |  | 2027-04-12 | 2027-04-25 |  |  |  |
| SDR-2-CON-PW-ZA-3000 |  | Backfilling for Chambers & Valves | 12d | 2027-04-12 | 2027-04-25 | SDR-2-CON-PW-ZA-2970 |  | 29d |
|  | 3 | **PORTABLE WATER IN ( PH2-G-MCF0 )** |  | 2026-07-14 | 2027-04-13 |  |  |  |
|  | 7 | **Pipes Work** |  | 2026-07-14 | 2027-01-05 |  |  |  |
|  | 1 | **Excavation** |  | 2026-07-14 | 2026-08-09 |  |  |  |
| SDR-2-CON-PW-ZA-3980 |  | Excavation for PW HDPE Pipe 225 mm. Section 1 | 21d | 2026-07-14 A | 2026-07-20 A | SDR-2-CON-TS-ZA-2900 SS | 100% |  |
| SDR-2-CON-PW-ZA-3010 |  | Excavation for PW HDPE Pipe 225 mm. Section 2 | 21d | 2026-08-01 A | 2026-08-09 A | SDR-2-CON-PW-ZA-3980 | 100% |  |
|  | 3 | **bedding Works** |  | 2026-08-10 | 2026-12-07 |  |  |  |
| SDR-2-CON-PW-ZA-3040 |  | Sand bedding for PW HDPE Pipe 225 mm. | 18d | 2026-08-10 A | 2026-12-07 | SDR-2-CON-PW-ZA-3010 | 90% | 100d |
|  | 2 | **Pipes Laying** |  | 2026-08-13 | 2026-08-18 |  |  |  |
| SDR-2-CON-PW-ZA-3020 |  | Install PW 225 mm HDPE Pipe | 19d | 2026-08-13 A | 2026-08-18 A | SDR-2-CON-PW-ZA-3040 SS | 100% |  |
|  | 5 | **Testing** |  | 2026-12-07 | 2026-12-15 |  |  |  |
| SDR-2-CON-PW-ZA-3030 |  | Testing of PW HDPE Pipe 225 mm. | 8d | 2026-12-07 | 2026-12-15 | SDR-2-CON-PW-ZA-3020 |  | 100d |
|  | 4 | **Backfilling** |  | 2026-12-16 | 2027-01-05 |  |  |  |
| SDR-2-CON-PW-ZA-3050 |  | Backfilling of PW HDPE Pipe 225 mm. | 18d | 2026-12-16 | 2027-01-05 | SDR-2-CON-PW-ZA-3030 |  | 100d |
|  | 3 | **Valve Chambers & Valves & Fire Hydrant** |  | 2026-12-07 | 2027-04-13 |  |  |  |
|  | 3 | **Excavation** |  | 2026-12-07 | 2027-01-24 |  |  |  |
| SDR-2-CON-PW-ZA-3990 |  | Excavation for Valve Chambers Section 1 | 21d | 2026-12-07 | 2026-12-30 | SDR-2-CON-PW-ZA-3980 SS |  | 21d |
| SDR-2-CON-PW-ZA-3080 |  | Excavation for Valve Chambers Section 2 | 21d | 2026-12-31 | 2027-01-24 | SDR-2-CON-PW-ZA-3990 |  | 21d |
|  | 1 | **bedding Works** |  | 2027-01-25 | 2027-02-16 |  |  |  |
| SDR-2-CON-PW-ZA-3060 |  | Sand bedding for Valve Chambers | 20d | 2027-01-25 | 2027-02-16 | SDR-2-CON-PW-ZA-3080 |  | 21d |
|  | 4 | **Install Chambers & Valves & Fire Hydrant** |  | 2027-02-17 | 2027-03-16 |  |  |  |
| SDR-2-CON-PW-ZA-3090 |  | Install Chambers & Valves | 19d | 2027-02-17 | 2027-03-16 | SDR-2-CON-PW-ZA-3060 |  | 21d |
|  | 2 | **Testing** |  | 2027-03-17 | 2027-03-25 |  |  |  |
| SDR-2-CON-PW-ZA-3070 |  | Testing for Chambers & Valves | 8d | 2027-03-17 | 2027-03-25 | SDR-2-CON-PW-ZA-3090 |  | 21d |
|  | 6 | **Backfilling** |  | 2027-03-27 | 2027-04-13 |  |  |  |
| SDR-2-CON-PW-ZA-3100 |  | Backfilling for Chambers & Valves | 16d | 2027-03-27 | 2027-04-13 | SDR-2-CON-PW-ZA-3070 |  | 21d |
|  | 4 | **PORTABLE WATER IN ( PH2-G-MCG0 )** |  | 2026-06-08 | 2027-01-27 |  |  |  |
|  | 7 | **Pipes Work** |  | 2026-06-08 | 2026-11-02 |  |  |  |
|  | 1 | **Excavation** |  | 2026-06-08 | 2026-06-29 |  |  |  |
| SDR-2-CON-PW-ZA-4000 |  | Excavation for PW HDPE Pipe 225 mm. Section 1 | 21d | 2026-06-08 A | 2026-06-18 A | SDR-2-CON-TS-ZA-3000 SS | 100% |  |
| SDR-2-CON-PW-ZA-3110 |  | Excavation for PW HDPE Pipe 225 mm. Section 2 | 21d | 2026-06-15 A | 2026-06-29 A | SDR-2-CON-PW-ZA-4000 | 100% |  |
|  | 3 | **bedding Works** |  | 2026-08-26 | 2026-10-05 |  |  |  |
| SDR-2-CON-PW-ZA-3140 |  | Sand bedding for PW HDPE Pipe 225 mm. | 18d | 2026-08-26 A | 2026-10-05 | SDR-2-CON-PW-ZA-3110 | 50% | 155d |
|  | 2 | **Pipes Laying** |  | 2026-08-13 | 2026-08-20 |  |  |  |
| SDR-2-CON-PW-ZA-3120 |  | Install PW 225 mm HDPE Pipe | 14d | 2026-08-13 A | 2026-08-20 A | SDR-2-CON-PW-ZA-3140 SS | 100% |  |
|  | 5 | **Testing** |  | 2026-10-05 | 2026-10-13 |  |  |  |
| SDR-2-CON-PW-ZA-3130 |  | Testing of PW HDPE Pipe 225 mm. | 8d | 2026-10-05 | 2026-10-13 | SDR-2-CON-PW-ZA-3120 |  | 155d |
|  | 4 | **Backfilling** |  | 2026-10-14 | 2026-11-02 |  |  |  |
| SDR-2-CON-PW-ZA-3150 |  | Backfilling of PW HDPE Pipe 225 mm. | 17d | 2026-10-14 | 2026-11-02 | SDR-2-CON-PW-ZA-3130 |  | 155d |
|  | 3 | **Valve Chambers & Valves & Fire Hydrant** |  | 2026-10-05 | 2027-01-27 |  |  |  |

| ID | WBS | Task | Duration | Start | Finish | Predecessors | Complete | Total float |
| --- | --- | --- | --- | --- | --- | --- | --- | --- |
|  | 3 | **Excavation** |  | 2026-10-05 | 2026-11-22 |  |  |  |
| SDR-2-CON-PW-ZA-4010 |  | Excavation for Valve Chambers Section 1 | 21d | 2026-10-05 | 2026-10-28 | SDR-2-CON-PW-ZA-4000 SS |  | 81d |
| SDR-2-CON-PW-ZA-3180 |  | Excavation for Valve Chambers Section 2 | 21d | 2026-10-29 | 2026-11-22 | SDR-2-CON-PW-ZA-4010 |  | 81d |
|  | 1 | **bedding Works** |  | 2026-11-23 | 2026-12-13 |  |  |  |
| SDR-2-CON-PW-ZA-3160 |  | Sand bedding for Valve Chambers | 18d | 2026-11-23 | 2026-12-13 | SDR-2-CON-PW-ZA-3180 |  | 81d |
|  | 4 | **Install Chambers & Valves & Fire Hydrant** |  | 2026-12-14 | 2026-12-29 |  |  |  |
| SDR-2-CON-PW-ZA-3190 |  | Install Chambers & Valves | 14d | 2026-12-14 | 2026-12-29 | SDR-2-CON-PW-ZA-3160 |  | 81d |
|  | 2 | **Testing** |  | 2026-12-30 | 2027-01-07 |  |  |  |
| SDR-2-CON-PW-ZA-3170 |  | Testing for Chambers & Valves | 8d | 2026-12-30 | 2027-01-07 | SDR-2-CON-PW-ZA-3190 |  | 81d |
|  | 6 | **Backfilling** |  | 2027-01-09 | 2027-01-27 |  |  |  |
| SDR-2-CON-PW-ZA-3200 |  | Backfilling for Chambers & Valves | 17d | 2027-01-09 | 2027-01-27 | SDR-2-CON-PW-ZA-3170 |  | 81d |
|  | 5 | **PORTABLE WATER IN ( PH2-G-MCZ0 )** |  | 2026-07-13 | 2027-01-28 |  |  |  |
|  | 7 | **Pipes Work** |  | 2026-07-13 | 2026-11-01 |  |  |  |
|  | 1 | **Excavation** |  | 2026-07-13 | 2026-08-19 |  |  |  |
| SDR-2-CON-PW-ZA-4020 |  | Excavation for PW HDPE Pipes 315 mm Section 1 | 21d | 2026-07-13 A | 2026-07-20 A | SDR-2-CON-TS-ZA-2500 SS | 100% |  |
| SDR-2-CON-PW-ZA-2560 |  | Excavation for PW HDPE Pipes 315 mm Section 2 | 21d | 2026-07-21 A | 2026-08-19 A | SDR-2-CON-PW-ZA-4020 | 100% |  |
|  | 8 | **bedding Works** |  | 2026-08-26 | 2026-10-05 |  |  |  |
| SDR-2-CON-PW-ZA-2640 |  | Sand bedding for PW HDPE Pipes 315 mm | 19d | 2026-08-26 A | 2026-10-05 | SDR-2-CON-PW-ZA-2560 | 50% | 156d |
|  | 2 | **Pipes Laying** |  | 2026-08-13 | 2026-10-05 |  |  |  |
| SDR-2-CON-PW-ZA-2570 |  | Install PW 315 mm HDPE Pipe | 16d | 2026-08-13 A | 2026-10-05 | SDR-2-CON-PW-ZA-2640 FF | 95% | 156d |
|  | 5 | **Testing** |  | 2026-10-06 | 2026-10-12 |  |  |  |
| SDR-2-CON-PW-ZA-2630 |  | Testing of PW HDPE Pipe 315 mm. | 6d | 2026-10-06 | 2026-10-12 | SDR-2-CON-PW-ZA-2570 |  | 156d |
|  | 9 | **Backfilling** |  | 2026-10-13 | 2026-11-01 |  |  |  |
| SDR-2-CON-PW-ZA-2650 |  | Backfilling of PW HDPE Pipe 315 mm. | 17d | 2026-10-13 | 2026-11-01 | SDR-2-CON-PW-ZA-2630 |  | 156d |
|  | 3 | **Valve Chambers & Valves & Fire Hydrant** |  | 2026-10-05 | 2027-01-28 |  |  |  |
|  | 3 | **Excavation** |  | 2026-10-05 | 2026-11-22 |  |  |  |
| SDR-2-CON-PW-ZA-4030 |  | Excavation for Valve Chambers Section 1 | 21d | 2026-10-05 | 2026-10-28 | SDR-2-CON-PW-ZA-4020 SS |  | 80d |
| SDR-2-CON-PW-ZA-2600 |  | Excavation for Valve Chambers Section 2 | 21d | 2026-10-29 | 2026-11-22 | SDR-2-CON-PW-ZA-4030 |  | 80d |
|  | 1 | **bedding Works** |  | 2026-11-23 | 2026-12-14 |  |  |  |
| SDR-2-CON-PW-ZA-2580 |  | Sand bedding for Valve Chambers | 19d | 2026-11-23 | 2026-12-14 | SDR-2-CON-PW-ZA-2600 |  | 80d |
|  | 4 | **Install Chambers & Valves & Fire Hydrant** |  | 2026-12-15 | 2027-01-02 |  |  |  |
| SDR-2-CON-PW-ZA-2610 |  | Install Chambers & Valves | 16d | 2026-12-15 | 2027-01-02 | SDR-2-CON-PW-ZA-2580 |  | 80d |
|  | 2 | **Testing** |  | 2027-01-03 | 2027-01-09 |  |  |  |
| SDR-2-CON-PW-ZA-2590 |  | Testing for Chambers & Valves | 6d | 2027-01-03 | 2027-01-09 | SDR-2-CON-PW-ZA-2610 |  | 80d |
|  | 6 | **Backfilling** |  | 2027-01-10 | 2027-01-28 |  |  |  |
| SDR-2-CON-PW-ZA-2620 |  | Backfilling for Chambers & Valves | 17d | 2027-01-10 | 2027-01-28 | SDR-2-CON-PW-ZA-2590 |  | 80d |
|  | EW | **Electrical Works** |  | 2026-07-01 | 2027-02-25 |  |  |  |
|  | ZA | **ZONE A** |  | 2026-07-01 | 2027-02-25 |  |  |  |
|  | 1 | **Street Lighting Network** |  | 2026-07-01 | 2027-02-25 |  |  |  |
|  | 16 | **Street Lighting Network IN ( PH2-COL-MC10 )** |  | 2026-07-20 | 2027-02-17 |  |  |  |
|  | 10 | **Excavation** |  | 2026-07-20 | 2026-10-05 |  |  |  |
| SDR-2-CON-SL-ZA-3590 |  | Excavation for LV Cable Drawpits | 21d | 2026-07-20 A | 2026-09-28 A | SDR-2-PRO-DEL-E-1060, SDR-2-PRO-DEL-M-1010, SDR-2-PRO-DEL-M-1000, SDR-2-PRO-DES-E-1010, SDR-2-PRO-ST-E-1080 | 100% |  |
| SDR-2-CON-SL-ZA-1000 |  | Excavation for LV Cable Trenches | 21d | 2026-08-12 A | 2026-10-05 | SDR-2-PRO-DEL-E-1060, SDR-2-CON-SL-ZA-3590 FF | 20% | 4d |
|  | 11 | **Install Footings** |  | 2026-08-31 | 2026-12-13 |  |  |  |
| SDR-2-CON-SL-ZA-1010 |  | Install Footings | 21d | 2026-08-31 A | 2026-12-13 | SDR-2-CON-SL-ZA-1000 FF, SDR-2-PRO-DEL-E-1030 FF, SDR-2-PRO-DEL-E-1020 FF, SDR-2-PRO-DEL-E-1070 FF, SDR-2-PRO-DEL-E-1000, SDR-2-PRO-DEL-E-1010, SDR-2-PRO-DEL-E-1210 | 30% | 8d |
|  | 12 | **Backfilling** |  | 2026-12-14 | 2027-01-06 |  |  |  |
| SDR-2-CON-SL-ZA-1110 |  | Backfilling over LV Cables of Street lighting | 21d | 2026-12-14 | 2027-01-06 | SDR-2-CON-SL-ZA-1010 |  | 8d |
|  | 13 | **Install pole** |  | 2027-01-25 | 2027-02-17 |  |  |  |
| SDR-2-CON-SL-ZA-1100 |  | Install Pole | 21d | 2027-01-25 | 2027-02-17 | SDR-2-PRO-MAL-E-1040, SDR-2-CON-SL-ZA-1010, SDR-2-CON-SL-ZA-1110 FS+15d, SDR-2-PRO-DEL-E-1100 |  | 8d |
|  | 17 | **Street Lighting Network IN ( PH2-COL-MC20 )** |  | 2026-07-01 | 2027-01-02 |  |  |  |
|  | 10 | **Excavation** |  | 2026-07-01 | 2026-10-05 |  |  |  |
| SDR-2-CON-SL-ZA-3600 |  | Excavation for LV Cable Drawpits | 21d | 2026-07-01 A | 2026-09-28 A | SDR-2-PRO-DES-E-1010, SDR-2-CON-SL-ZA-3590 FF | 100% |  |
| SDR-2-CON-SL-ZA-2870 |  | Excavation for LV Cable Trenches | 21d | 2026-07-13 A | 2026-10-05 | SDR-2-CON-SL-ZA-3600 FF | 50% | 67d |
|  | 11 | **Install Footings** |  | 2026-09-03 | 2026-10-11 |  |  |  |
| SDR-2-CON-SL-ZA-2880 |  | Install Footings | 21d | 2026-09-03 A | 2026-10-11 | SDR-2-CON-SL-ZA-2870 FF, SDR-2-PRO-DES-E-1020 FF | 30% | 62d |
|  | 12 | **Backfilling** |  | 2026-10-12 | 2026-11-04 |  |  |  |
| SDR-2-CON-SL-ZA-2900 |  | Backfilling over LV Cables of Street lighting | 21d | 2026-10-12 | 2026-11-04 | SDR-2-CON-SL-ZA-2880 |  | 62d |
|  | 13 | **Install pole** |  | 2026-12-09 | 2027-01-02 |  |  |  |
| SDR-2-CON-SL-ZA-2890 |  | Install Pole | 21d | 2026-12-09 | 2027-01-02 | SDR-2-CON-SL-ZA-2880, SDR-2-CON-SL-ZA-2900 FS+15d, SDR-2-PRO-DEL-E-1080 |  | 48d |
|  | 18 | **Street Lighting Network IN ( PH2-A-MCA0 )** |  | 2026-08-01 | 2026-12-19 |  |  |  |
|  | 10 | **Excavation** |  | 2026-08-01 | 2026-10-05 |  |  |  |
| SDR-2-CON-SL-ZA-3610 |  | Excavation for LV Cable Drawpits | 21d | 2026-08-01 A | 2026-10-05 | SDR-2-CON-SL-ZA-3600 FF | 65% | 23d |
| SDR-2-CON-SL-ZA-1300 |  | Excavation for LV Cable Trenches | 21d | 2026-08-12 A | 2026-10-05 | SDR-2-CON-SL-ZA-3610 FF | 50% | 66d |
|  | 11 | **Install Footings** |  | 2026-09-03 | 2026-11-07 |  |  |  |
| SDR-2-CON-SL-ZA-1310 |  | Install Footings | 21d | 2026-09-03 A | 2026-11-07 | SDR-2-CON-SL-ZA-1300 FF, SDR-2-CON-ST-ZA-6290 FF | 30% | 38d |
|  | 12 | **Backfilling** |  | 2026-11-01 | 2026-11-24 |  |  |  |
| SDR-2-CON-SL-ZA-1410 |  | Backfilling over LV Cables of Street lighting | 21d | 2026-11-01 | 2026-11-24 | SDR-2-CON-SL-ZA-1310 SS |  | 38d |
|  | 13 | **Install pole** |  | 2026-11-25 | 2026-12-19 |  |  |  |
| SDR-2-CON-SL-ZA-1400 |  | Install Pole | 21d | 2026-11-25 | 2026-12-19 | SDR-2-CON-SL-ZA-1410 |  | 38d |
|  | 19 | **Street Lighting Network IN ( PH2-A-MCB0 )** |  | 2026-08-04 | 2026-12-07 |  |  |  |

| ID | WBS | Task | Duration | Start | Finish | Predecessors | Complete | Total float |
| --- | --- | --- | --- | --- | --- | --- | --- | --- |
|  | 10 | **Excavation** |  | 2026-08-04 | 2026-10-05 |  |  |  |
| SDR-2-CON-SL-ZA-3620 |  | Excavation for LV Cable Drawpits | 21d | 2026-08-04 A | 2026-10-05 | SDR-2-CON-SL-ZA-3610 FF | 70% | 23d |
| SDR-2-CON-SL-ZA-2950 |  | Excavation for LV Cable Trenches | 21d | 2026-08-12 A | 2026-10-05 | SDR-2-CON-SL-ZA-3620 FF | 50% | 23d |
|  | 11 | **Install Footings** |  | 2026-08-31 | 2026-10-07 |  |  |  |
| SDR-2-CON-SL-ZA-2960 |  | Install Footings | 21d | 2026-08-31 A | 2026-10-07 | SDR-2-CON-SL-ZA-2950 FF | 30% | 21d |
|  | 12 | **Backfilling** |  | 2026-10-08 | 2026-11-01 |  |  |  |
| SDR-2-CON-SL-ZA-2980 |  | Backfilling over LV Cables of Street lighting | 21d | 2026-10-08 | 2026-11-01 | SDR-2-CON-SL-ZA-2960 |  | 21d |
|  | 13 | **Install pole** |  | 2026-11-14 | 2026-12-07 |  |  |  |
| SDR-2-CON-SL-ZA-2970 |  | Install Pole | 21d | 2026-11-14 | 2026-12-07 | SDR-2-CON-SL-ZA-2980 FS+10d |  | 21d |
|  | 20 | **Street Lighting Network IN ( PH2-A-MCC0 )** |  | 2026-07-20 | 2026-12-16 |  |  |  |
|  | 10 | **Excavation** |  | 2026-07-20 | 2026-10-05 |  |  |  |
| SDR-2-CON-SL-ZA-3630 |  | Excavation for LV Cable Drawpits | 21d | 2026-07-20 A | 2026-10-05 | SDR-2-CON-SL-ZA-3620 FF | 75% | 40d |
| SDR-2-CON-SL-ZA-2990 |  | Excavation for LV Cable Trenches | 21d | 2026-08-01 A | 2026-10-05 | SDR-2-CON-SL-ZA-3630 FF | 50% | 66d |
|  | 11 | **Install Footings** |  | 2026-09-03 | 2026-10-11 |  |  |  |
| SDR-2-CON-SL-ZA-3000 |  | Install Footings | 21d | 2026-09-03 A | 2026-10-11 | SDR-2-CON-SL-ZA-2990 FF | 30% | 61d |
|  | 12 | **Backfilling** |  | 2026-10-12 | 2026-11-04 |  |  |  |
| SDR-2-CON-SL-ZA-3020 |  | Backfilling over LV Cables of Street lighting | 21d | 2026-10-12 | 2026-11-04 | SDR-2-CON-SL-ZA-3000 |  | 61d |
|  | 13 | **Install pole** |  | 2026-11-23 | 2026-12-16 |  |  |  |
| SDR-2-CON-SL-ZA-3010 |  | Install Pole | 21d | 2026-11-23 | 2026-12-16 | SDR-2-CON-SL-ZA-3020 FS+15d |  | 61d |
|  | 21 | **Street Lighting Network IN ( PH2-A-MCD0 )** |  | 2026-07-20 | 2027-02-25 |  |  |  |
|  | 10 | **Excavation** |  | 2026-07-20 | 2026-10-05 |  |  |  |
| SDR-2-CON-SL-ZA-3640 |  | Excavation for LV Cable Drawpits | 21d | 2026-07-20 A | 2026-10-05 | SDR-2-PRO-DES-E-1000 FS+12d, SDR-2-CON-SL-ZA-3630 FF | 75% | 40d |
| SDR-2-CON-SL-ZA-3030 |  | Excavation for LV Cable Trenches | 21d | 2026-08-01 A | 2026-10-05 | SDR-2-CON-SL-ZA-3640 FF | 50% | 87d |
|  | 11 | **Install Footings** |  | 2026-09-03 | 2026-10-11 |  |  |  |
| SDR-2-CON-SL-ZA-3040 |  | Install Footings | 21d | 2026-09-03 A | 2026-10-11 | SDR-2-CON-SL-ZA-3030 FF | 40% | 82d |
|  | 12 | **Backfilling** |  | 2026-10-12 | 2026-11-04 |  |  |  |
| SDR-2-CON-SL-ZA-3060 |  | Backfilling over LV Cables of Street lighting | 21d | 2026-10-12 | 2026-11-04 | SDR-2-CON-SL-ZA-3040 |  | 82d |
|  | 13 | **Install pole** |  | 2027-02-01 | 2027-02-25 |  |  |  |
| SDR-2-CON-SL-ZA-3050 |  | Install Pole | 21d | 2027-02-01 | 2027-02-25 | SDR-2-CON-MV-ZA-1100, SDR-2-CON-SL-ZA-3550 SS+10d, SDR-2-CON-SL-ZA-3520, SDR-2-CON-SL-ZA-3060 FS+15d |  | 22d |
|  | 22 | **Street Lighting Network IN ( PH2-A-MCE0 )** |  | 2026-07-02 | 2026-12-14 |  |  |  |
|  | 10 | **Excavation** |  | 2026-07-02 | 2026-10-05 |  |  |  |
| SDR-2-CON-SL-ZA-3650 |  | Excavation for LV Cable Drawpits | 21d | 2026-07-02 A | 2026-10-05 | SDR-2-PRO-ST-E-1050, SDR-2-CON-SL-ZA-3640 FF, SDR-2-PRO-ST-E-1020 FF | 65% | 40d |
| SDR-2-CON-SL-ZA-3070 |  | Excavation for LV Cable Trenches | 21d | 2026-07-14 A | 2026-10-05 | SDR-2-CON-SL-ZA-3650 FF | 50% | 107d |
|  | 11 | **Install Footings** |  | 2026-09-03 | 2026-10-11 |  |  |  |
| SDR-2-CON-SL-ZA-3080 |  | Install Footings | 21d | 2026-09-03 A | 2026-10-11 | SDR-2-CON-SL-ZA-3070 FF | 30% | 102d |
|  | 12 | **Backfilling** |  | 2026-10-12 | 2026-11-04 |  |  |  |
| SDR-2-CON-SL-ZA-3100 |  | Backfilling over LV Cables of Street lighting | 21d | 2026-10-12 | 2026-11-04 | SDR-2-CON-SL-ZA-3080 |  | 102d |
|  | 13 | **Install pole** |  | 2026-11-23 | 2026-12-14 |  |  |  |
| SDR-2-CON-SL-ZA-3090 |  | Install Pole | 19d | 2026-11-23 | 2026-12-14 | SDR-2-CON-ST-ZA-4040, SDR-2-CON-RW-ZA-3390 FS+2d, SDR-2-CON-RW-ZA-3270 FS+2d, SDR-2-CON-SL-ZA-3100 FS+15d |  | 102d |
|  | 23 | **Street Lighting Network IN ( PH2-A-MCF0 )** |  | 2026-07-01 | 2026-12-19 |  |  |  |
|  | 10 | **Excavation** |  | 2026-07-01 | 2026-10-14 |  |  |  |
| SDR-2-CON-SL-ZA-3660 |  | Excavation for LV Cable Drawpits | 21d | 2026-07-01 A | 2026-10-14 | SDR-2-CON-SL-ZA-3650 FF, SDR-2-PRO-ST-E-1040 FF, SDR-2-PRO-ST-E-1030 FF | 65% | 32d |
| SDR-2-CON-SL-ZA-3110 |  | Excavation for LV Cable Trenches | 21d | 2026-07-14 A | 2026-10-14 | SDR-2-CON-SL-ZA-3660 FF | 50% | 32d |
|  | 11 | **Install Footings** |  | 2026-08-31 | 2026-10-14 |  |  |  |
| SDR-2-CON-SL-ZA-3120 |  | Install Footings | 20d | 2026-08-31 A | 2026-10-14 | SDR-2-CON-SL-ZA-3110 FF | 30% | 32d |
|  | 12 | **Backfilling** |  | 2026-10-15 | 2026-11-07 |  |  |  |
| SDR-2-CON-SL-ZA-3140 |  | Backfilling over LV Cables of Street lighting | 20d | 2026-10-15 | 2026-11-07 | SDR-2-CON-SL-ZA-3120 |  | 32d |
|  | 13 | **Install pole** |  | 2026-11-25 | 2026-12-19 |  |  |  |
| SDR-2-CON-SL-ZA-3130 |  | Install Pole | 21d | 2026-11-25 | 2026-12-19 | SDR-2-CON-SL-ZA-3140 FS+15d |  | 32d |
|  | 24 | **Street Lighting Network IN ( PH2-A-MCG0 )** |  | 2026-07-06 | 2026-12-07 |  |  |  |
|  | 10 | **Excavation** |  | 2026-07-06 | 2026-10-14 |  |  |  |
| SDR-2-CON-SL-ZA-3670 |  | Excavation for LV Cable Drawpits | 21d | 2026-07-06 A | 2026-10-14 | SDR-2-CON-SL-ZA-3660 FF | 65% | 43d |
| SDR-2-CON-SL-ZA-3150 |  | Excavation for LV Cable Trenches | 21d | 2026-07-16 A | 2026-10-14 | SDR-2-CON-SL-ZA-3670 FF | 50% | 108d |
|  | 11 | **Install Footings** |  | 2026-09-03 | 2026-10-14 |  |  |  |
| SDR-2-CON-SL-ZA-3160 |  | Install Footings | 20d | 2026-09-03 A | 2026-10-14 | SDR-2-CON-SL-ZA-3150 FF | 30% | 108d |
|  | 12 | **Backfilling** |  | 2026-10-15 | 2026-11-05 |  |  |  |
| SDR-2-CON-SL-ZA-3180 |  | Backfilling over LV Cables of Street lighting | 19d | 2026-10-15 | 2026-11-05 | SDR-2-CON-SL-ZA-3160 |  | 108d |
|  | 13 | **Install pole** |  | 2026-11-24 | 2026-12-07 |  |  |  |
| SDR-2-CON-SL-ZA-3170 |  | Install Pole | 12d | 2026-11-24 | 2026-12-07 | SDR-2-CON-SL-ZA-3180 FS+15d |  | 108d |
|  | 25 | **Street Lighting Network IN ( PH2-A-MCH0 )** |  | 2026-07-20 | 2026-12-13 |  |  |  |
|  | 10 | **Excavation** |  | 2026-07-20 | 2026-10-14 |  |  |  |
| SDR-2-CON-SL-ZA-3680 |  | Excavation for LV Cable Drawpits | 21d | 2026-07-20 A | 2026-10-14 | SDR-2-CON-SL-ZA-3670 FF | 65% | 43d |
| SDR-2-CON-SL-ZA-3190 |  | Excavation for LV Cable Trenches | 21d | 2026-08-01 A | 2026-10-14 | SDR-2-CON-SL-ZA-3680 FF | 50% | 43d |
|  | 11 | **Install Footings** |  | 2026-09-03 | 2026-10-14 |  |  |  |
| SDR-2-CON-SL-ZA-3200 |  | Install Footings | 20d | 2026-09-03 A | 2026-10-14 | SDR-2-CON-SL-ZA-3190 FF | 30% | 43d |
|  | 12 | **Backfilling** |  | 2026-10-15 | 2026-11-05 |  |  |  |
| SDR-2-CON-SL-ZA-3220 |  | Backfilling over LV Cables of Street lighting | 19d | 2026-10-15 | 2026-11-05 | SDR-2-CON-SL-ZA-3200 |  | 43d |
|  | 13 | **Install pole** |  | 2026-11-24 | 2026-12-13 |  |  |  |
| SDR-2-CON-SL-ZA-3210 |  | Install Pole | 17d | 2026-11-24 | 2026-12-13 | SDR-2-CON-SL-ZA-3220 FS+15d |  | 43d |
|  | 27 | **Street Lighting Network IN ( PH2-ART-MC10 )** |  | 2026-07-20 | 2026-12-17 |  |  |  |

| ID | WBS | Task | Duration | Start | Finish | Predecessors | Complete | Total float |
| --- | --- | --- | --- | --- | --- | --- | --- | --- |
|  | 10 | **Excavation** |  | 2026-07-20 | 2026-10-14 |  |  |  |
| SDR-2-CON-SL-ZA-3690 |  | Excavation for LV Cable Drawpits | 21d | 2026-07-20 A | 2026-10-14 | SDR-2-CON-SL-ZA-3680 FF | 70% | 51d |
| SDR-2-CON-SL-ZA-2910 |  | Excavation for LV Cable Trenches | 21d | 2026-08-01 A | 2026-10-14 | SDR-2-CON-SL-ZA-3690 FF | 50% | 53d |
|  | 11 | **Install Footings** |  | 2026-09-03 | 2026-10-14 |  |  |  |
| SDR-2-CON-SL-ZA-2920 |  | Install Footings | 21d | 2026-09-03 A | 2026-10-14 | SDR-2-CON-SL-ZA-2910 FF | 30% | 53d |
|  | 12 | **Backfilling** |  | 2026-10-15 | 2026-11-08 |  |  |  |
| SDR-2-CON-SL-ZA-2940 |  | Backfilling over LV Cables of Street lighting | 21d | 2026-10-15 | 2026-11-08 | SDR-2-CON-SL-ZA-2920 |  | 53d |
|  | 13 | **Install pole** |  | 2026-11-24 | 2026-12-17 |  |  |  |
| SDR-2-CON-SL-ZA-2930 |  | Install Pole | 21d | 2026-11-24 | 2026-12-17 | SDR-2-CON-RW-ZA-2320, SDR-2-CON-SL-ZA-2920, SDR-2-CON-SL-ZA-2940 FS+13d |  | 103d |
|  | 10 | **Lighting Pole Panels** |  | 2026-10-15 | 2027-02-02 |  |  |  |
|  | 1 | **Excavation** |  | 2026-10-15 | 2026-11-08 |  |  |  |
| SDR-2-CON-SL-ZA-2650 |  | Street Lighting Panels Excavation | 21d | 2026-10-15 | 2026-11-08 | SDR-2-CON-SL-ZA-3690 SS+5d, SDR-2-PRO-ST-E-1110, SDR-2-PRO-MAL-E-1080 |  | 50d |
|  | 2 | **Install Footings** |  | 2026-11-09 | 2026-12-01 |  |  |  |
| SDR-2-CON-SL-ZA-2760 |  | Installation Footings Street Lighting Panels | 20d | 2026-11-09 | 2026-12-01 | SDR-2-CON-SL-ZA-2650 |  | 63d |
|  | 3 | **Backfilling** |  | 2026-12-02 | 2026-12-22 |  |  |  |
| SDR-2-CON-SL-ZA-2770 |  | Street Lighting Panels Backfilling | 18d | 2026-12-02 | 2026-12-22 | SDR-2-CON-SL-ZA-2760 |  | 63d |
|  | 4 | **Install pole** |  | 2027-01-10 | 2027-02-02 |  |  |  |
| SDR-2-CON-SL-ZA-2780 |  | Street Lighting Panels Installation | 21d | 2027-01-10 | 2027-02-02 | SDR-2-CON-SL-ZA-2770 FS+15d |  | 63d |
|  | 11 | **Ring Main Unit** |  | 2026-10-15 | 2027-01-04 |  |  |  |
|  | 1 | **Leveling** |  | 2026-10-15 | 2026-11-07 |  |  |  |
| SDR-2-CON-SL-ZA-2660 |  | Ring Main Unit leveling | 20d | 2026-10-15 | 2026-11-07 | SDR-2-CON-SL-ZA-2650 SS |  | 50d |
|  | 2 | **Lean Concrete** |  | 2026-11-08 | 2026-11-30 |  |  |  |
| SDR-2-CON-SL-ZA-2790 |  | Ring Main Unit Lean Concrete | 20d | 2026-11-08 | 2026-11-30 | SDR-2-CON-SL-ZA-2660 |  | 51d |
|  | 3 | **Installation** |  | 2026-12-13 | 2027-01-04 |  |  |  |
| SDR-2-CON-SL-ZA-2800 |  | Ring Main Unit installation for Street Lighting | 20d | 2026-12-13 | 2027-01-04 | SDR-2-PRO-ST-M-1060, SDR-2-PRO-ST-M-1070, SDR-2-CON-SL-ZA-2790 FS+10d |  | 51d |
|  | 12 | **Feeder Pillars** |  | 2026-11-01 | 2027-01-26 |  |  |  |
|  | 1 | **Leveling** |  | 2026-11-01 | 2026-11-23 |  |  |  |
| SDR-2-CON-SL-ZA-2670 |  | Feeder Pillars Leveling | 20d | 2026-11-01 | 2026-11-23 | SDR-2-CON-SL-ZA-2660 SS, SDR-2-PRO-ST-E-1130, SDR-2-PRO-MAL-E-1100 |  | 36d |
|  | 2 | **Lean Concrete** |  | 2026-11-24 | 2026-12-16 |  |  |  |
| SDR-2-CON-SL-ZA-2810 |  | Feeder Pillars Lean Concrete | 20d | 2026-11-24 | 2026-12-16 | SDR-2-CON-SL-ZA-2670 |  | 49d |
|  | 3 | **Installation** |  | 2027-01-04 | 2027-01-26 |  |  |  |
| SDR-2-CON-SL-ZA-2820 |  | Feeder Pillars Installation | 20d | 2027-01-04 | 2027-01-26 | SDR-2-CON-MV-ZA-1100, SDR-2-CON-SL-ZA-2810 FS+15d |  | 49d |
|  | 13 | **KWH Frame** |  | 2026-12-05 | 2027-02-11 |  |  |  |
|  | 1 | **Leveling** |  | 2026-12-05 | 2026-12-27 |  |  |  |
| SDR-2-CON-SL-ZA-2680 |  | KWH meter mounting frame Leveling | 20d | 2026-12-05 | 2026-12-27 | SDR-2-CON-SL-ZA-2670 SS+1d, SDR-2-PRO-ST-E-1120, SDR-2-PRO-MAL-E-1090 |  | 8d |
|  | 2 | **Lean Concrete** |  | 2026-12-28 | 2027-01-19 |  |  |  |
| SDR-2-CON-SL-ZA-2830 |  | KWH meter mounting frame Lean Concrete | 20d | 2026-12-28 | 2027-01-19 | SDR-2-CON-SL-ZA-2680 |  | 18d |
|  | 3 | **Installation** |  | 2027-01-20 | 2027-02-11 |  |  |  |
| SDR-2-CON-SL-ZA-2840 |  | KWH meter mounting frame installation | 20d | 2027-01-20 | 2027-02-11 | SDR-2-CON-SL-ZA-2830 |  | 18d |
|  | 14 | **Street Lighting Sub-station** |  | 2026-12-06 | 2027-02-14 |  |  |  |
|  | 1 | **Leveling** |  | 2026-12-06 | 2026-12-28 |  |  |  |
| SDR-2-CON-SL-ZA-2690 |  | Unit Substation Leveling | 20d | 2026-12-06 | 2026-12-28 | SDR-2-CON-SL-ZA-2680 SS+1d, SDR-2-PRO-ST-E-1100, SDR-2-PRO-MAL-E-1070 |  | 8d |
|  | 2 | **Lean Concrete** |  | 2026-12-29 | 2027-01-20 |  |  |  |
| SDR-2-CON-SL-ZA-2850 |  | Unit Substation Lean Concrete | 20d | 2026-12-29 | 2027-01-20 | SDR-2-CON-SL-ZA-2690 |  | 16d |
|  | 3 | **Installation** |  | 2027-01-21 | 2027-02-14 |  |  |  |
| SDR-2-CON-SL-ZA-2860 |  | Unit Substation Install for Street Lighting | 21d | 2027-01-21 | 2027-02-14 | SDR-2-CON-SL-ZA-2850 |  | 16d |
|  | 2 | **MV Network** |  | 2026-07-14 | 2026-12-09 |  |  |  |
|  | 1 | **LOOP 3** |  | 2026-07-14 | 2026-11-08 |  |  |  |
|  | 6 | **Excavation** |  | 2026-07-14 | 2026-10-05 |  |  |  |
| SDR-2-CON-MV-ZA-1000 |  | Excavation Works | 21d | 2026-07-14 A | 2026-10-05 | SDR-2-CON-SL-ZA-1000 FF | 70% | 25d |
|  | 7 | **Pipe laying** |  | 2026-07-25 | 2026-10-05 |  |  |  |
| SDR-2-CON-MV-ZA-1070 |  | Pipe Laying | 20d | 2026-07-25 A | 2026-10-05 | SDR-2-CON-MV-ZA-1000 FF | 70% | 30d |
|  | 8 | **Backfilling** |  | 2026-08-03 | 2026-10-05 |  |  |  |
| SDR-2-CON-MV-ZA-1150 |  | Backfilling Works | 21d | 2026-08-03 A | 2026-10-05 | SDR-2-CON-MV-ZA-1070 FF, SDR-2-PRO-MAL-E-1000 | 70% | 30d |
|  | 9 | **Pulling Cable** |  | 2026-10-15 | 2026-11-08 |  |  |  |
| SDR-2-CON-MV-ZA-1100 |  | Pulling Cable | 21d | 2026-10-15 | 2026-11-08 | SDR-2-PRO-ST-E-1000, SDR-2-CON-MV-ZA-1070, SDR-2-CON-MV-ZA-1150, SDR-2-PRO-ST-E-1010 |  | 22d |
|  | 2 | **LOOP 4** |  | 2026-07-25 | 2026-12-09 |  |  |  |
|  | 6 | **Excavation** |  | 2026-07-25 | 2026-10-05 |  |  |  |
| SDR-2-CON-MV-ZA-1160 |  | Excavation Works | 21d | 2026-07-25 A | 2026-10-05 | SDR-2-CON-MV-ZA-1000 FF | 70% | 26d |
|  | 7 | **Pipe laying** |  | 2026-08-13 | 2026-10-05 |  |  |  |
| SDR-2-CON-MV-ZA-1170 |  | Pipe Laying | 21d | 2026-08-13 A | 2026-10-05 | SDR-2-CON-MV-ZA-1160 FF | 62% | 26d |
|  | 8 | **Backfilling** |  | 2026-10-06 | 2026-10-29 |  |  |  |
| SDR-2-CON-MV-ZA-1190 |  | Backfilling Works | 21d | 2026-10-06 | 2026-10-29 | SDR-2-CON-MV-ZA-1170 |  | 26d |
|  | 9 | **Pulling Cable** |  | 2026-11-16 | 2026-12-09 |  |  |  |
| SDR-2-CON-MV-ZA-1180 |  | Pulling Cable | 21d | 2026-11-16 | 2026-12-09 | SDR-2-CON-MV-ZA-1100, SDR-2-CON-MV-ZA-1170, SDR-2-CON-MV-ZA-1190 FS+14d |  | 26d |
|  | 3 | **LOOP 5** |  | 2026-08-13 | 2026-12-02 |  |  |  |
|  | 6 | **Excavation** |  | 2026-08-13 | 2026-10-05 |  |  |  |
| SDR-2-CON-MV-ZA-1200 |  | Excavation Works | 21d | 2026-08-13 A | 2026-10-05 | SDR-2-CON-MV-ZA-1160 FF | 50% | 32d |
|  | 7 | **Pipe laying** |  | 2026-08-13 | 2026-10-05 |  |  |  |
| SDR-2-CON-MV-ZA-1210 |  | Pipe Laying | 21d | 2026-08-13 A | 2026-10-05 | SDR-2-CON-MV-ZA-1200 FF | 50% | 32d |

| ID | WBS | Task | Duration | Start | Finish | Predecessors | Complete | Total float |
| --- | --- | --- | --- | --- | --- | --- | --- | --- |
|  | 8 | **Backfilling** |  | 2026-10-06 | 2026-10-29 |  |  |  |
| SDR-2-CON-MV-ZA-1230 |  | Backfilling Works | 21d | 2026-10-06 | 2026-10-29 | SDR-2-CON-MV-ZA-1210 |  | 32d |
|  | 9 | **Pulling Cable** |  | 2026-11-09 | 2026-12-02 |  |  |  |
| SDR-2-CON-MV-ZA-1220 |  | Pulling Cable | 21d | 2026-11-09 | 2026-12-02 | SDR-2-CON-MV-ZA-1210, SDR-2-CON-MV-ZA-1230 FS+8d |  | 32d |
|  | 4 | **LOOP 6** |  | 2026-08-13 | 2026-12-02 |  |  |  |
|  | 6 | **Excavation** |  | 2026-08-13 | 2026-10-05 |  |  |  |
| SDR-2-CON-MV-ZA-1240 |  | Excavation Works | 21d | 2026-08-13 A | 2026-10-05 | SDR-2-CON-MV-ZA-1200 FF | 50% | 37d |
|  | 7 | **Pipe laying** |  | 2026-08-13 | 2026-10-05 |  |  |  |
| SDR-2-CON-MV-ZA-1250 |  | Pipe Laying | 20d | 2026-08-13 A | 2026-10-05 | SDR-2-CON-MV-ZA-1240 FF | 50% | 37d |
|  | 8 | **Backfilling** |  | 2026-10-06 | 2026-10-29 |  |  |  |
| SDR-2-CON-MV-ZA-1270 |  | Backfilling Works | 21d | 2026-10-06 | 2026-10-29 | SDR-2-CON-MV-ZA-1250 |  | 37d |
|  | 9 | **Pulling Cable** |  | 2026-11-09 | 2026-12-02 |  |  |  |
| SDR-2-CON-MV-ZA-1260 |  | Pulling Cable | 21d | 2026-11-09 | 2026-12-02 | SDR-2-CON-MV-ZA-1100, SDR-2-CON-MV-ZA-1250, SDR-2-CON-MV-ZA-1270 FS+6d |  | 35d |
|  | 3 | **TELECOMMUNICATIONS Works** |  | 2026-07-09 | 2027-02-06 |  |  |  |
|  | 1 | **TELECOMMUNICATION IN ( PH2-COL-MC10 )** |  | 2026-09-01 | 2027-02-01 |  |  |  |
|  | 3 | **Ducts** |  | 2026-09-13 | 2027-02-01 |  |  |  |
|  | 2 | **Excavation** |  | 2026-09-13 | 2026-11-14 |  |  |  |
| SDR-2-CON-TE-ZA-4560 |  | Excavation for telecom crossing ducts | 21d | 2026-09-13 A | 2026-10-20 | SDR-2-CON-SL-ZA-1000 FF | 50% | 7d |
| SDR-2-CON-TE-ZA-1000 |  | Excavation for telecom trenches | 21d | 2026-10-21 | 2026-11-14 | SDR-2-CON-TE-ZA-4560 |  | 14d |
|  | 5 | **Pipe laying** |  | 2026-11-15 | 2026-12-06 |  |  |  |
| SDR-2-CON-TE-ZA-1010 |  | HDPE Pipes for Telecom Installation | 19d | 2026-11-15 | 2026-12-06 | SDR-2-CON-TE-ZA-1000, SDR-2-PRO-MAS-E-1010 |  | 14d |
|  | 6 | **Backfilling** |  | 2026-12-07 | 2026-12-27 |  |  |  |
| SDR-2-CON-TE-ZA-1020 |  | Backfilling over HDPE Telecom Pipes | 18d | 2026-12-07 | 2026-12-27 | SDR-2-CON-TE-ZA-1010 |  | 14d |
|  | 7 | **Pulling Cable** |  | 2027-01-09 | 2027-02-01 |  |  |  |
| SDR-2-CON-TE-ZA-1840 |  | Pulling Cable | 21d | 2027-01-09 | 2027-02-01 | SDR-2-CON-TE-ZA-1020 FS+10d |  | 14d |
|  | 4 | **Manholes** |  | 2026-09-01 | 2027-01-05 |  |  |  |
|  | 1 | **Excavation** |  | 2026-09-01 | 2026-09-24 |  |  |  |
| SDR-2-CON-TE-ZA-1030 |  | Excavation for Telecom Manholes | 21d | 2026-09-01 A | 2026-09-24 A | SDR-2-CON-TE-ZA-4560 FF | 100% |  |
|  | 2 | **Bedding Work** |  | 2026-09-15 | 2026-10-21 |  |  |  |
| SDR-2-CON-TE-ZA-1850 |  | Sand bedding for Telecom Manhole | 19d | 2026-09-15 A | 2026-10-21 | SDR-2-CON-TE-ZA-1030 FF | 25% | 6.74d |
|  | 3 | **Install Manholes** |  | 2026-09-21 | 2026-11-14 |  |  |  |
| SDR-2-CON-TE-ZA-1040 |  | Installation of Telecom Manhole | 20d | 2026-09-21 A | 2026-11-14 | SDR-2-CON-TE-ZA-1030, SDR-2-PRO-MAL-E-1050, SDR-2-CON-TE-ZA-1850 | 25% | 6.74d |
|  | 4 | **Testting** |  | 2026-11-14 | 2026-11-30 |  |  |  |
| SDR-2-CON-TE-ZA-1050 |  | Telecom Manhole finishing works | 14d | 2026-11-14 | 2026-11-30 | SDR-2-CON-TE-ZA-1040 |  | 6.74d |
|  | 5 | **Backfilling** |  | 2026-12-12 | 2027-01-05 |  |  |  |
| SDR-2-CON-TE-ZA-1060 |  | Backfilling over Telecom Manhole | 21d | 2026-12-12 | 2027-01-05 | SDR-2-CON-MV-ZA-1100, SDR-2-CON-TE-ZA-1050 FS+10d |  | 6.74d |
|  | 2 | **TELECOMMUNICATION IN ( PH2-COL-MC20 )** |  | 2026-07-14 | 2026-12-02 |  |  |  |
|  | 3 | **Ducts** |  | 2026-07-14 | 2026-10-29 |  |  |  |
|  | 2 | **Excavation** |  | 2026-07-14 | 2026-10-05 |  |  |  |
| SDR-2-CON-TE-ZA-3210 |  | Excavation for telecom crossing ducts & trenches | 21d | 2026-07-14 A | 2026-10-05 | SDR-2-CON-SL-ZA-1000 FF | 75% | 4d |
|  | 5 | **Pipe laying** |  | 2026-07-21 | 2026-10-05 |  |  |  |
| SDR-2-CON-TE-ZA-3220 |  | HDPE Pipes for Telecom Installation | 20d | 2026-07-21 A | 2026-10-05 | SDR-2-CON-TE-ZA-3210 FF | 70% | 108d |
|  | 6 | **Backfilling** |  | 2026-08-01 | 2026-10-05 |  |  |  |
| SDR-2-CON-TE-ZA-3230 |  | Backfilling over HDPE Telecom Pipes | 20d | 2026-08-01 A | 2026-10-05 | SDR-2-CON-TE-ZA-3220 FF | 70% | 108d |
|  | 7 | **Pulling Cable** |  | 2026-10-06 | 2026-10-29 |  |  |  |
| SDR-2-CON-TE-ZA-3280 |  | Pulling Cable | 21d | 2026-10-06 | 2026-10-29 | SDR-2-CON-TE-ZA-3230 |  | 108d |
|  | 4 | **Manholes** |  | 2026-09-03 | 2026-12-02 |  |  |  |
|  | 1 | **Excavation** |  | 2026-09-03 | 2026-10-01 |  |  |  |
| SDR-2-CON-TE-ZA-3240 |  | Excavation for Telecom Manholes | 21d | 2026-09-03 A | 2026-10-01 A | SDR-2-CON-TE-ZA-3210 FF | 100% |  |
|  | 2 | **Bedding Work** |  | 2026-09-05 | 2026-10-11 |  |  |  |
| SDR-2-CON-TE-ZA-3290 |  | Sand bedding for Telecom Manhole | 20d | 2026-09-05 A | 2026-10-11 | SDR-2-CON-TE-ZA-3240 FF | 25% | 26d |
|  | 3 | **Install Manholes** |  | 2026-09-03 | 2026-10-11 |  |  |  |
| SDR-2-CON-TE-ZA-3250 |  | Installation of Telecom Manhole | 20d | 2026-09-03 A | 2026-10-11 | SDR-2-CON-TE-ZA-3240 FF, SDR-2-CON-TE-ZA-3290 FF | 55% | 26d |
|  | 4 | **Testting** |  | 2026-10-12 | 2026-10-27 |  |  |  |
| SDR-2-CON-TE-ZA-3260 |  | Telecom Manhole finishing works | 14d | 2026-10-12 | 2026-10-27 | SDR-2-CON-TE-ZA-3250 |  | 26d |
|  | 5 | **Backfilling** |  | 2026-11-09 | 2026-12-02 |  |  |  |
| SDR-2-CON-TE-ZA-3270 |  | Backfilling over Telecom Manhole | 21d | 2026-11-09 | 2026-12-02 | SDR-2-CON-TE-ZA-3260 FS+10d |  | 26d |
|  | 11 | **TELECOMMUNICATION IN ( PH2-A-MCA0 )** |  | 2026-08-01 | 2027-01-28 |  |  |  |
|  | 3 | **Ducts** |  | 2026-08-01 | 2026-12-24 |  |  |  |
|  | 2 | **Excavation** |  | 2026-08-01 | 2026-10-05 |  |  |  |
| SDR-2-CON-TE-ZA-3300 |  | Excavation for telecom crossing ducts & trenches | 21d | 2026-08-01 A | 2026-10-05 | SDR-2-CON-SL-ZA-1000 FF, SDR-2-CON-TE-ZA-3210 FF | 60% | 4d |
|  | 5 | **Pipe laying** |  | 2026-10-06 | 2026-10-27 |  |  |  |
| SDR-2-CON-TE-ZA-3310 |  | HDPE Pipes for Telecom Installation | 19d | 2026-10-06 | 2026-10-27 | SDR-2-CON-TE-ZA-3300 |  | 7d |
|  | 6 | **Backfilling** |  | 2026-10-28 | 2026-11-19 |  |  |  |
| SDR-2-CON-TE-ZA-3320 |  | Backfilling over HDPE Telecom Pipes | 20d | 2026-10-28 | 2026-11-19 | SDR-2-CON-TE-ZA-3310 |  | 7d |
|  | 7 | **Pulling Cable** |  | 2026-12-02 | 2026-12-24 |  |  |  |
| SDR-2-CON-TE-ZA-3370 |  | Pulling Cable | 20d | 2026-12-02 | 2026-12-24 | SDR-2-CON-MV-ZA-1100 FS+5d, SDR-2-CON-TE-ZA-3320 FS+10d |  | 7d |
|  | 4 | **Manholes** |  | 2026-09-07 | 2027-01-28 |  |  |  |
|  | 1 | **Excavation** |  | 2026-09-07 | 2026-10-15 |  |  |  |
| SDR-2-CON-TE-ZA-3330 |  | Excavation for Telecom Manholes | 21d | 2026-09-07 A | 2026-10-15 | SDR-2-CON-TE-ZA-3300 FF | 30% | 20.81d |

| ID | WBS | Task | Duration | Start | Finish | Predecessors | Complete | Total float |
| --- | --- | --- | --- | --- | --- | --- | --- | --- |
|  | 2 | **Bedding Work** |  | 2026-10-15 | 2026-11-08 |  |  |  |
| SDR-2-CON-TE-ZA-3380 |  | Sand bedding for Telecom Manhole | 20d | 2026-10-15 | 2026-11-08 | SDR-2-CON-TE-ZA-3330 |  | 20.81d |
|  | 3 | **Install Manholes** |  | 2026-11-08 | 2026-12-01 |  |  |  |
| SDR-2-CON-TE-ZA-3340 |  | Installation of Telecom Manhole | 20d | 2026-11-08 | 2026-12-01 | SDR-2-CON-TE-ZA-3330, SDR-2-CON-TE-ZA-3380 |  | 20.81d |
|  | 4 | **Testting** |  | 2026-12-01 | 2026-12-24 |  |  |  |
| SDR-2-CON-TE-ZA-3350 |  | Telecom Manhole finishing works | 20d | 2026-12-01 | 2026-12-24 | SDR-2-CON-TE-ZA-3340 |  | 20.81d |
|  | 5 | **Backfilling** |  | 2027-01-05 | 2027-01-28 |  |  |  |
| SDR-2-CON-TE-ZA-3360 |  | Backfilling over Telecom Manhole | 20d | 2027-01-05 | 2027-01-28 | SDR-2-CON-TE-ZA-3350 FS+10d |  | 20.81d |
|  | 12 | **TELECOMMUNICATION IN ( PH2-A-MCB0 )** |  | 2026-08-08 | 2027-02-06 |  |  |  |
|  | 3 | **Ducts** |  | 2026-08-08 | 2026-12-28 |  |  |  |
|  | 2 | **Excavation** |  | 2026-08-08 | 2026-10-05 |  |  |  |
| SDR-2-CON-TE-ZA-3390 |  | Excavation for telecom crossing ducts & trenches | 21d | 2026-08-08 A | 2026-10-05 | SDR-2-CON-SL-ZA-1000 FF, SDR-2-CON-TE-ZA-3300 FF | 25% | 4d |
|  | 5 | **Pipe laying** |  | 2026-10-06 | 2026-10-29 |  |  |  |
| SDR-2-CON-TE-ZA-3400 |  | HDPE Pipes for Telecom Installation | 21d | 2026-10-06 | 2026-10-29 | SDR-2-CON-TE-ZA-3390 |  | 4d |
|  | 6 | **Backfilling** |  | 2026-10-31 | 2026-11-22 |  |  |  |
| SDR-2-CON-TE-ZA-3410 |  | Backfilling over HDPE Telecom Pipes | 20d | 2026-10-31 | 2026-11-22 | SDR-2-CON-TE-ZA-3400 |  | 4d |
|  | 7 | **Pulling Cable** |  | 2026-12-05 | 2026-12-28 |  |  |  |
| SDR-2-CON-TE-ZA-3460 |  | Pulling Cable | 21d | 2026-12-05 | 2026-12-28 | SDR-2-CON-TE-ZA-3410 FS+10d |  | 4d |
|  | 4 | **Manholes** |  | 2026-09-13 | 2027-02-06 |  |  |  |
|  | 1 | **Excavation** |  | 2026-09-13 | 2026-10-21 |  |  |  |
| SDR-2-CON-TE-ZA-3420 |  | Excavation for Telecom Manholes | 21d | 2026-09-13 A | 2026-10-21 | SDR-2-CON-TE-ZA-3390 FF | 30% | 13.81d |
|  | 2 | **Bedding Work** |  | 2026-10-21 | 2026-11-14 |  |  |  |
| SDR-2-CON-TE-ZA-3470 |  | Sand bedding for Telecom Manhole | 20d | 2026-10-21 | 2026-11-14 | SDR-2-CON-TE-ZA-3420 |  | 13.81d |
|  | 3 | **Install Manholes** |  | 2026-11-14 | 2026-12-07 |  |  |  |
| SDR-2-CON-TE-ZA-3430 |  | Installation of Telecom Manhole | 20d | 2026-11-14 | 2026-12-07 | SDR-2-CON-TE-ZA-3420, SDR-2-CON-TE-ZA-3470 |  | 13.81d |
|  | 4 | **Testting** |  | 2026-12-07 | 2026-12-31 |  |  |  |
| SDR-2-CON-TE-ZA-3440 |  | Telecom Manhole finishing works | 21d | 2026-12-07 | 2026-12-31 | SDR-2-CON-TE-ZA-3430 |  | 13.81d |
|  | 5 | **Backfilling** |  | 2027-01-12 | 2027-02-06 |  |  |  |
| SDR-2-CON-TE-ZA-3450 |  | Backfilling over Telecom Manhole | 21d | 2027-01-12 | 2027-02-06 | SDR-2-CON-TE-ZA-4350, SDR-2-CON-TE-ZA-4360, SDR-2-CON-TE-ZA-4260, SDR-2-CON-TE-ZA-4270, SDR-2-CON-MV-ZA-1340, SDR-2-CON-TE-ZA-3440 FS+10d |  | 13.81d |
|  | 13 | **TELECOMMUNICATION IN ( PH2-A-MCC0 )** |  | 2026-07-20 | 2026-12-19 |  |  |  |
|  | 3 | **Ducts** |  | 2026-07-20 | 2026-12-08 |  |  |  |
|  | 2 | **Excavation** |  | 2026-07-20 | 2026-10-05 |  |  |  |
| SDR-2-CON-TE-ZA-3480 |  | Excavation for telecom crossing ducts & trenches | 21d | 2026-07-20 A | 2026-10-05 | SDR-2-CON-SL-ZA-1000 FF, SDR-2-CON-TE-ZA-3390 FF | 75% | 9d |
|  | 5 | **Pipe laying** |  | 2026-09-03 | 2026-10-10 |  |  |  |
| SDR-2-CON-TE-ZA-3490 |  | HDPE Pipes for Telecom Installation | 20d | 2026-09-03 A | 2026-10-10 | SDR-2-CON-TE-ZA-3480 FF | 25% | 21d |
|  | 6 | **Backfilling** |  | 2026-10-11 | 2026-11-02 |  |  |  |
| SDR-2-CON-TE-ZA-3500 |  | Backfilling over HDPE Telecom Pipes | 20d | 2026-10-11 | 2026-11-02 | SDR-2-CON-TE-ZA-3490 |  | 21d |
|  | 7 | **Pulling Cable** |  | 2026-11-15 | 2026-12-08 |  |  |  |
| SDR-2-CON-TE-ZA-3550 |  | Pulling Cable | 21d | 2026-11-15 | 2026-12-08 | SDR-2-CON-TE-ZA-3500 FS+10d |  | 21d |
|  | 4 | **Manholes** |  | 2026-09-10 | 2026-12-19 |  |  |  |
|  | 1 | **Excavation** |  | 2026-09-10 | 2026-10-01 |  |  |  |
| SDR-2-CON-TE-ZA-3510 |  | Excavation for Telecom Manholes | 21d | 2026-09-10 A | 2026-10-01 A | SDR-2-CON-TE-ZA-3480 FF | 100% |  |
|  | 2 | **Bedding Work** |  | 2026-09-10 | 2026-10-18 |  |  |  |
| SDR-2-CON-TE-ZA-3560 |  | Sand bedding for Telecom Manhole | 20d | 2026-09-10 A | 2026-10-18 | SDR-2-CON-TE-ZA-3510 FF | 30% | 12.81d |
|  | 3 | **Install Manholes** |  | 2026-10-01 | 2026-11-09 |  |  |  |
| SDR-2-CON-TE-ZA-3520 |  | Installation of Telecom Manhole | 19d | 2026-10-01 A | 2026-11-09 | SDR-2-CON-TE-ZA-3510, SDR-2-CON-TE-ZA-3560 | 30% | 12.81d |
|  | 4 | **Testting** |  | 2026-11-09 | 2026-11-25 |  |  |  |
| SDR-2-CON-TE-ZA-3530 |  | Telecom Manhole finishing works | 14d | 2026-11-09 | 2026-11-25 | SDR-2-CON-TE-ZA-3520 |  | 12.81d |
|  | 5 | **Backfilling** |  | 2026-11-25 | 2026-12-19 |  |  |  |
| SDR-2-CON-TE-ZA-3540 |  | Backfilling over Telecom Manhole | 20d | 2026-11-25 | 2026-12-19 | SDR-2-CON-TE-ZA-3530 |  | 12.81d |
|  | 14 | **TELECOMMUNICATION IN ( PH2-A-MCD0 )** |  | 2026-07-20 | 2026-12-29 |  |  |  |
|  | 3 | **Ducts** |  | 2026-07-20 | 2026-11-24 |  |  |  |
|  | 2 | **Excavation** |  | 2026-07-20 | 2026-10-05 |  |  |  |
| SDR-2-CON-TE-ZA-3570 |  | Excavation for telecom crossing ducts & trenches | 21d | 2026-07-20 A | 2026-10-05 | SDR-2-CON-SL-ZA-1000 FF, SDR-2-CON-TE-ZA-3480 FF | 75% | 9d |
|  | 5 | **Pipe laying** |  | 2026-09-03 | 2026-10-10 |  |  |  |
| SDR-2-CON-TE-ZA-3580 |  | HDPE Pipes for Telecom Installation | 20d | 2026-09-03 A | 2026-10-10 | SDR-2-CON-TE-ZA-3570 FF | 25% | 123d |
|  | 6 | **Backfilling** |  | 2026-10-11 | 2026-10-31 |  |  |  |
| SDR-2-CON-TE-ZA-3590 |  | Backfilling over HDPE Telecom Pipes | 18d | 2026-10-11 | 2026-10-31 | SDR-2-CON-TE-ZA-3580 |  | 123d |
|  | 7 | **Pulling Cable** |  | 2026-11-01 | 2026-11-24 |  |  |  |
| SDR-2-CON-TE-ZA-3640 |  | Pulling Cable | 21d | 2026-11-01 | 2026-11-24 | SDR-2-CON-TE-ZA-3590 |  | 123d |
|  | 4 | **Manholes** |  | 2026-09-10 | 2026-12-29 |  |  |  |
|  | 1 | **Excavation** |  | 2026-09-10 | 2026-10-01 |  |  |  |
| SDR-2-CON-TE-ZA-3600 |  | Excavation for Telecom Manholes | 21d | 2026-09-10 A | 2026-10-01 A | SDR-2-CON-TE-ZA-3570 FF | 100% |  |
|  | 2 | **Bedding Work** |  | 2026-09-15 | 2026-10-22 |  |  |  |
| SDR-2-CON-TE-ZA-3650 |  | Sand bedding for Telecom Manhole | 20d | 2026-09-15 A | 2026-10-22 | SDR-2-CON-TE-ZA-3600 FF | 30% | 43.81d |
|  | 3 | **Install Manholes** |  | 2026-10-01 | 2026-11-16 |  |  |  |
| SDR-2-CON-TE-ZA-3610 |  | Installation of Telecom Manhole | 21d | 2026-10-01 A | 2026-11-16 | SDR-2-CON-TE-ZA-3600, SDR-2-CON-TE-ZA-3650 | 30% | 43.81d |
|  | 4 | **Testting** |  | 2026-11-22 | 2026-12-05 |  |  |  |
| SDR-2-CON-TE-ZA-3620 |  | Telecom Manhole finishing works | 12d | 2026-11-22 | 2026-12-05 | SDR-2-CON-CC-ZG-1610, SDR-2-CON-TE-ZA-3610 |  | 39d |
|  | 5 | **Backfilling** |  | 2026-12-06 | 2026-12-29 |  |  |  |

| ID | WBS | Task | Duration | Start | Finish | Predecessors | Complete | Total float |
| --- | --- | --- | --- | --- | --- | --- | --- | --- |
| SDR-2-CON-TE-ZA-3630 |  | Backfilling over Telecom Manhole | 21d | 2026-12-06 | 2026-12-29 | SDR-2-CON-TE-ZA-4540, SDR-2-CON-TE-ZA-3620 |  | 39d |
|  | 5 | **TELECOMMUNICATION IN ( PH2-A-MCE0 )** |  | 2026-07-14 | 2027-01-20 |  |  |  |
|  | 3 | **Ducts** |  | 2026-07-14 | 2026-11-23 |  |  |  |
|  | 2 | **Excavation** |  | 2026-07-14 | 2026-10-05 |  |  |  |
| SDR-2-CON-TE-ZA-3660 |  | Excavation for telecom crossing ducts & trenches | 21d | 2026-07-14 A | 2026-10-05 | SDR-2-CON-SL-ZA-1000 FF, SDR-2-CON-TE-ZA-3570 FF | 75% | 9d |
|  | 5 | **Pipe laying** |  | 2026-07-21 | 2026-10-05 |  |  |  |
| SDR-2-CON-TE-ZA-3670 |  | HDPE Pipes for Telecom Installation | 17d | 2026-07-21 A | 2026-10-05 | SDR-2-CON-TE-ZA-3660 FF | 25% | 124d |
|  | 6 | **Backfilling** |  | 2026-10-06 | 2026-10-29 |  |  |  |
| SDR-2-CON-TE-ZA-3680 |  | Backfilling over HDPE Telecom Pipes | 21d | 2026-10-06 | 2026-10-29 | SDR-2-CON-TE-ZA-3670 |  | 124d |
|  | 7 | **Pulling Cable** |  | 2026-10-31 | 2026-11-23 |  |  |  |
| SDR-2-CON-TE-ZA-3730 |  | Pulling Cable | 21d | 2026-10-31 | 2026-11-23 | SDR-2-CON-TE-ZA-3680 |  | 124d |
|  | 4 | **Manholes** |  | 2026-10-05 | 2027-01-20 |  |  |  |
|  | 1 | **Excavation** |  | 2026-10-05 | 2026-10-28 |  |  |  |
| SDR-2-CON-TE-ZA-3690 |  | Excavation for Telecom Manholes | 21d | 2026-10-05 | 2026-10-28 | SDR-2-CON-TE-ZA-3660 SS |  | 10d |
|  | 2 | **Bedding Work** |  | 2026-10-29 | 2026-11-21 |  |  |  |
| SDR-2-CON-TE-ZA-3740 |  | Sand bedding for Telecom Manhole | 20d | 2026-10-29 | 2026-11-21 | SDR-2-CON-TE-ZA-3690 |  | 10d |
|  | 3 | **Install Manholes** |  | 2026-11-22 | 2026-12-14 |  |  |  |
| SDR-2-CON-TE-ZA-3700 |  | Installation of Telecom Manhole | 20d | 2026-11-22 | 2026-12-14 | SDR-2-CON-TE-ZA-3690, SDR-2-CON-TE-ZA-3740 |  | 10d |
|  | 4 | **Testting** |  | 2026-12-15 | 2026-12-28 |  |  |  |
| SDR-2-CON-TE-ZA-3710 |  | Telecom Manhole finishing works | 12d | 2026-12-15 | 2026-12-28 | SDR-2-CON-TE-ZA-3700 |  | 10d |
|  | 5 | **Backfilling** |  | 2026-12-29 | 2027-01-20 |  |  |  |
| SDR-2-CON-TE-ZA-3720 |  | Backfilling over Telecom Manhole | 20d | 2026-12-29 | 2027-01-20 | SDR-2-CON-TE-ZA-3710 |  | 10d |
|  | 6 | **TELECOMMUNICATION IN ( PH2-A-MCF0 )** |  | 2026-07-14 | 2027-01-21 |  |  |  |
|  | 3 | **Ducts** |  | 2026-07-14 | 2026-11-22 |  |  |  |
|  | 2 | **Excavation** |  | 2026-07-14 | 2026-10-05 |  |  |  |
| SDR-2-CON-TE-ZA-3750 |  | Excavation for telecom crossing ducts & trenches | 21d | 2026-07-14 A | 2026-10-05 | SDR-2-CON-SL-ZA-1000 FF, SDR-2-CON-TE-ZA-3660 FF | 75% | 9d |
|  | 5 | **Pipe laying** |  | 2026-07-21 | 2026-10-05 |  |  |  |
| SDR-2-CON-TE-ZA-3760 |  | HDPE Pipes for Telecom Installation | 20d | 2026-07-21 A | 2026-10-05 | SDR-2-CON-TE-ZA-3750 FF | 25% | 61d |
|  | 6 | **Backfilling** |  | 2026-10-06 | 2026-10-29 |  |  |  |
| SDR-2-CON-TE-ZA-3770 |  | Backfilling over HDPE Telecom Pipes | 21d | 2026-10-06 | 2026-10-29 | SDR-2-CON-TE-ZA-3760 |  | 61d |
|  | 7 | **Pulling Cable** |  | 2026-10-31 | 2026-11-22 |  |  |  |
| SDR-2-CON-TE-ZA-3820 |  | Pulling Cable | 20d | 2026-10-31 | 2026-11-22 | SDR-2-CON-TE-ZA-3770 |  | 61d |
|  | 4 | **Manholes** |  | 2026-10-05 | 2027-01-21 |  |  |  |
|  | 1 | **Excavation** |  | 2026-10-05 | 2026-10-28 |  |  |  |
| SDR-2-CON-TE-ZA-3780 |  | Excavation for Telecom Manholes | 21d | 2026-10-05 | 2026-10-28 | SDR-2-CON-TE-ZA-3750 SS |  | 9d |
|  | 2 | **Bedding Work** |  | 2026-10-29 | 2026-11-21 |  |  |  |
| SDR-2-CON-TE-ZA-3830 |  | Sand bedding for Telecom Manhole | 20d | 2026-10-29 | 2026-11-21 | SDR-2-CON-TE-ZA-3780 |  | 9d |
|  | 3 | **Install Manholes** |  | 2026-11-22 | 2026-12-14 |  |  |  |
| SDR-2-CON-TE-ZA-3790 |  | Installation of Telecom Manhole | 20d | 2026-11-22 | 2026-12-14 | SDR-2-CON-TE-ZA-3780, SDR-2-CON-TE-ZA-3830 |  | 9d |
|  | 4 | **Testting** |  | 2026-12-15 | 2026-12-28 |  |  |  |
| SDR-2-CON-TE-ZA-3800 |  | Telecom Manhole finishing works | 12d | 2026-12-15 | 2026-12-28 | SDR-2-CON-TE-ZA-3790 |  | 9d |
|  | 5 | **Backfilling** |  | 2026-12-29 | 2027-01-21 |  |  |  |
| SDR-2-CON-TE-ZA-3810 |  | Backfilling over Telecom Manhole | 21d | 2026-12-29 | 2027-01-21 | SDR-2-CON-TE-ZA-3800 |  | 9d |
|  | 7 | **TELECOMMUNICATION IN ( PH2-A-MCG0 )** |  | 2026-07-14 | 2027-01-20 |  |  |  |
|  | 3 | **Ducts** |  | 2026-07-14 | 2026-12-02 |  |  |  |
|  | 2 | **Excavation** |  | 2026-07-14 | 2026-10-05 |  |  |  |
| SDR-2-CON-TE-ZA-3840 |  | Excavation for telecom crossing ducts & trenches | 21d | 2026-07-14 A | 2026-10-05 | SDR-2-CON-SL-ZA-1000 FF, SDR-2-CON-TE-ZA-3750 FF | 75% | 10d |
|  | 5 | **Pipe laying** |  | 2026-07-21 | 2026-10-05 |  |  |  |
| SDR-2-CON-TE-ZA-3850 |  | HDPE Pipes for Telecom Installation | 20d | 2026-07-21 A | 2026-10-05 | SDR-2-CON-TE-ZA-3840 FF | 25% | 52d |
|  | 6 | **Backfilling** |  | 2026-10-06 | 2026-10-28 |  |  |  |
| SDR-2-CON-TE-ZA-3860 |  | Backfilling over HDPE Telecom Pipes | 20d | 2026-10-06 | 2026-10-28 | SDR-2-CON-TE-ZA-3850 |  | 52d |
|  | 7 | **Pulling Cable** |  | 2026-11-09 | 2026-12-02 |  |  |  |
| SDR-2-CON-TE-ZA-3910 |  | Pulling Cable | 21d | 2026-11-09 | 2026-12-02 | SDR-2-CON-TE-ZA-3860 FS+9d |  | 52d |
|  | 4 | **Manholes** |  | 2026-10-05 | 2027-01-20 |  |  |  |
|  | 1 | **Excavation** |  | 2026-10-05 | 2026-10-28 |  |  |  |
| SDR-2-CON-TE-ZA-3870 |  | Excavation for Telecom Manholes | 21d | 2026-10-05 | 2026-10-28 | SDR-2-CON-TE-ZA-3840 SS |  | 10d |
|  | 2 | **Bedding Work** |  | 2026-10-29 | 2026-11-21 |  |  |  |
| SDR-2-CON-TE-ZA-3920 |  | Sand bedding for Telecom Manhole | 20d | 2026-10-29 | 2026-11-21 | SDR-2-CON-TE-ZA-3870 |  | 10d |
|  | 3 | **Install Manholes** |  | 2026-11-22 | 2026-12-14 |  |  |  |
| SDR-2-CON-TE-ZA-3880 |  | Installation of Telecom Manhole | 20d | 2026-11-22 | 2026-12-14 | SDR-2-CON-TE-ZA-3870, SDR-2-CON-TE-ZA-3920 |  | 10d |
|  | 4 | **Testting** |  | 2026-12-15 | 2026-12-28 |  |  |  |
| SDR-2-CON-TE-ZA-3890 |  | Telecom Manhole finishing works | 12d | 2026-12-15 | 2026-12-28 | SDR-2-CON-TE-ZA-3880 |  | 10d |
|  | 5 | **Backfilling** |  | 2026-12-29 | 2027-01-20 |  |  |  |
| SDR-2-CON-TE-ZA-3900 |  | Backfilling over Telecom Manhole | 20d | 2026-12-29 | 2027-01-20 | SDR-2-CON-TE-ZA-3890 |  | 10d |
|  | 8 | **TELECOMMUNICATION IN ( PH2-A-MCH0 )** |  | 2026-07-30 | 2027-01-18 |  |  |  |
|  | 3 | **Ducts** |  | 2026-07-30 | 2026-12-15 |  |  |  |
|  | 2 | **Excavation** |  | 2026-07-30 | 2026-10-05 |  |  |  |
| SDR-2-CON-TE-ZA-3930 |  | Excavation for telecom crossing ducts & trenches | 21d | 2026-07-30 A | 2026-10-05 | SDR-2-CON-SL-ZA-1000 FF, SDR-2-CON-TE-ZA-3840 FF | 80% | 12d |
|  | 5 | **Pipe laying** |  | 2026-10-06 | 2026-10-28 |  |  |  |
| SDR-2-CON-TE-ZA-3940 |  | HDPE Pipes for Telecom Installation | 20d | 2026-10-06 | 2026-10-28 | SDR-2-CON-TE-ZA-3930 |  | 41d |

| ID | WBS | Task | Duration | Start | Finish | Predecessors | Complete | Total float |
| --- | --- | --- | --- | --- | --- | --- | --- | --- |
|  | 6 | **Backfilling** |  | 2026-10-29 | 2026-11-21 |  |  |  |
| SDR-2-CON-TE-ZA-3950 |  | Backfilling over HDPE Telecom Pipes | 20d | 2026-10-29 | 2026-11-21 | SDR-2-CON-TE-ZA-3940 |  | 41d |
|  | 7 | **Pulling Cable** |  | 2026-11-22 | 2026-12-15 |  |  |  |
| SDR-2-CON-TE-ZA-4000 |  | Pulling Cable | 21d | 2026-11-22 | 2026-12-15 | SDR-2-CON-TE-ZA-3950 |  | 41d |
|  | 4 | **Manholes** |  | 2026-10-05 | 2027-01-18 |  |  |  |
|  | 1 | **Excavation** |  | 2026-10-05 | 2026-10-28 |  |  |  |
| SDR-2-CON-TE-ZA-3960 |  | Excavation for Telecom Manholes | 21d | 2026-10-05 | 2026-10-28 | SDR-2-CON-TE-ZA-3930 SS |  | 12d |
|  | 2 | **Bedding Work** |  | 2026-10-29 | 2026-11-21 |  |  |  |
| SDR-2-CON-TE-ZA-4010 |  | Sand bedding for Telecom Manhole | 20d | 2026-10-29 | 2026-11-21 | SDR-2-CON-TE-ZA-3960 |  | 12d |
|  | 3 | **Install Manholes** |  | 2026-11-22 | 2026-12-14 |  |  |  |
| SDR-2-CON-TE-ZA-3970 |  | Installation of Telecom Manhole | 20d | 2026-11-22 | 2026-12-14 | SDR-2-CON-TE-ZA-3960, SDR-2-CON-TE-ZA-4010 |  | 12d |
|  | 4 | **Testting** |  | 2026-12-15 | 2026-12-28 |  |  |  |
| SDR-2-CON-TE-ZA-3980 |  | Telecom Manhole finishing works | 12d | 2026-12-15 | 2026-12-28 | SDR-2-CON-TE-ZA-3970 |  | 12d |
|  | 5 | **Backfilling** |  | 2026-12-29 | 2027-01-18 |  |  |  |
| SDR-2-CON-TE-ZA-3990 |  | Backfilling over Telecom Manhole | 18d | 2026-12-29 | 2027-01-18 | SDR-2-CON-TE-ZA-3980 |  | 12d |
|  | 9 | **TELECOMMUNICATION IN ( PH2-ART-MC00 )** |  | 2026-07-09 | 2027-01-18 |  |  |  |
|  | 3 | **Ducts** |  | 2026-07-09 | 2026-12-14 |  |  |  |
|  | 2 | **Excavation** |  | 2026-07-09 | 2026-10-05 |  |  |  |
| SDR-2-CON-TE-ZA-4020 |  | Excavation for telecom crossing ducts & trenches | 21d | 2026-07-09 A | 2026-10-05 | SDR-2-CON-SL-ZA-1000 FF, SDR-2-CON-TE-ZA-3930 FF | 70% | 12d |
|  | 5 | **Pipe laying** |  | 2026-10-06 | 2026-10-28 |  |  |  |
| SDR-2-CON-TE-ZA-4030 |  | HDPE Pipes for Telecom Installation | 20d | 2026-10-06 | 2026-10-28 | SDR-2-CON-TE-ZA-4020 |  | 42d |
|  | 6 | **Backfilling** |  | 2026-10-29 | 2026-11-19 |  |  |  |
| SDR-2-CON-TE-ZA-4040 |  | Backfilling over HDPE Telecom Pipes | 19d | 2026-10-29 | 2026-11-19 | SDR-2-CON-TE-ZA-4030 |  | 42d |
|  | 7 | **Pulling Cable** |  | 2026-11-21 | 2026-12-14 |  |  |  |
| SDR-2-CON-TE-ZA-4090 |  | Pulling Cable | 21d | 2026-11-21 | 2026-12-14 | SDR-2-CON-TE-ZA-4040 |  | 42d |
|  | 4 | **Manholes** |  | 2026-10-05 | 2027-01-18 |  |  |  |
|  | 1 | **Excavation** |  | 2026-10-05 | 2026-10-28 |  |  |  |
| SDR-2-CON-TE-ZA-4050 |  | Excavation for Telecom Manholes | 21d | 2026-10-05 | 2026-10-28 | SDR-2-CON-TE-ZA-4020 SS |  | 12d |
|  | 2 | **Bedding Work** |  | 2026-10-29 | 2026-11-21 |  |  |  |
| SDR-2-CON-TE-ZA-4100 |  | Sand bedding for Telecom Manhole | 20d | 2026-10-29 | 2026-11-21 | SDR-2-CON-TE-ZA-4050 |  | 12d |
|  | 3 | **Install Manholes** |  | 2026-11-22 | 2026-12-14 |  |  |  |
| SDR-2-CON-TE-ZA-4060 |  | Installation of Telecom Manhole | 20d | 2026-11-22 | 2026-12-14 | SDR-2-CON-TE-ZA-4050, SDR-2-CON-TE-ZA-4100 |  | 12d |
|  | 4 | **Testting** |  | 2026-12-15 | 2026-12-28 |  |  |  |
| SDR-2-CON-TE-ZA-4070 |  | Telecom Manhole finishing works | 12d | 2026-12-15 | 2026-12-28 | SDR-2-CON-TE-ZA-4060 |  | 12d |
|  | 5 | **Backfilling** |  | 2026-12-29 | 2027-01-18 |  |  |  |
| SDR-2-CON-TE-ZA-4080 |  | Backfilling over Telecom Manhole | 18d | 2026-12-29 | 2027-01-18 | SDR-2-CON-TE-ZA-4070 |  | 12d |
|  | 10 | **TELECOMMUNICATION IN ( PH2-ART-MC10 )** |  | 2026-07-14 | 2026-11-28 |  |  |  |
|  | 3 | **Ducts** |  | 2026-07-14 | 2026-11-22 |  |  |  |
|  | 2 | **Excavation** |  | 2026-07-14 | 2026-10-05 |  |  |  |
| SDR-2-CON-TE-ZA-4110 |  | Excavation for telecom crossing ducts & trenches | 21d | 2026-07-14 A | 2026-10-05 | SDR-2-CON-SL-ZA-1000 FF, SDR-2-CON-TE-ZA-3930 FF | 75% | 61d |
|  | 5 | **Pipe laying** |  | 2026-07-21 | 2026-10-05 |  |  |  |
| SDR-2-CON-TE-ZA-4120 |  | HDPE Pipes for Telecom Installation | 20d | 2026-07-21 A | 2026-10-05 | SDR-2-CON-TE-ZA-4110 FF | 25% | 61d |
|  | 6 | **Backfilling** |  | 2026-10-06 | 2026-10-28 |  |  |  |
| SDR-2-CON-TE-ZA-4130 |  | Backfilling over HDPE Telecom Pipes | 20d | 2026-10-06 | 2026-10-28 | SDR-2-CON-TE-ZA-4120 |  | 61d |
|  | 7 | **Pulling Cable** |  | 2026-10-29 | 2026-11-22 |  |  |  |
| SDR-2-CON-TE-ZA-4180 |  | Pulling Cable | 21d | 2026-10-29 | 2026-11-22 | SDR-2-CON-TE-ZA-4130 |  | 61d |
|  | 4 | **Manholes** |  | 2026-09-12 | 2026-11-28 |  |  |  |
|  | 1 | **Excavation** |  | 2026-09-12 | 2026-09-30 |  |  |  |
| SDR-2-CON-TE-ZA-4140 |  | Excavation for Telecom Manholes | 21d | 2026-09-12 A | 2026-09-30 A | SDR-2-CON-TE-ZA-4110 FF | 100% |  |
|  | 2 | **Bedding Work** |  | 2026-09-16 | 2026-10-21 |  |  |  |
| SDR-2-CON-TE-ZA-4190 |  | Sand bedding for Telecom Manhole | 18d | 2026-09-16 A | 2026-10-21 | SDR-2-CON-TE-ZA-4140 FF | 25% | 56.46d |
|  | 3 | **Install Manholes** |  | 2026-09-13 | 2026-10-21 |  |  |  |
| SDR-2-CON-TE-ZA-4150 |  | Installation of Telecom Manhole | 20d | 2026-09-13 A | 2026-10-21 | SDR-2-CON-TE-ZA-4140 FF, SDR-2-CON-TE-ZA-4190 FF | 50% | 56.46d |
|  | 4 | **Testting** |  | 2026-10-21 | 2026-11-03 |  |  |  |
| SDR-2-CON-TE-ZA-4160 |  | Telecom Manhole finishing works | 11d | 2026-10-21 | 2026-11-03 | SDR-2-CON-TE-ZA-4150 |  | 56.46d |
|  | 5 | **Backfilling** |  | 2026-11-03 | 2026-11-28 |  |  |  |
| SDR-2-CON-TE-ZA-4170 |  | Backfilling over Telecom Manhole | 21d | 2026-11-03 | 2026-11-28 | SDR-2-CON-TE-ZA-4160 |  | 56.46d |
|  | ZG | **ZONE G** |  | 2026-07-01 | 2027-02-24 |  |  |  |
|  | 1 | **Street Lighting Network** |  | 2026-07-01 | 2027-02-24 |  |  |  |
|  | 5 | **Street Lighting IN ( PH2-G-MCA0 )** |  | 2026-08-13 | 2026-11-30 |  |  |  |
|  | 10 | **Excavation** |  | 2026-08-13 | 2026-10-05 |  |  |  |
| SDR-2-CON-SL-ZA-3230 |  | Excavation for LV Cable drawpits & trenches | 21d | 2026-08-13 A | 2026-10-05 | SDR-2-CON-SL-ZA-3590 FF, SDR-2-CON-SL-ZA-1000 FF, SDR-2-CON-SL-ZA-2950 FF | 76% | 39d |
|  | 11 | **Install Footings** |  | 2026-08-13 | 2026-10-05 |  |  |  |
| SDR-2-CON-SL-ZA-3240 |  | Install Footings | 21d | 2026-08-13 A | 2026-10-05 | SDR-2-CON-SL-ZA-3230 FF | 60% | 64d |
|  | 12 | **Backfilling** |  | 2026-10-06 | 2026-10-28 |  |  |  |
| SDR-2-CON-SL-ZA-3260 |  | Backfilling over LV Cables of Street lighting | 20d | 2026-10-06 | 2026-10-28 | SDR-2-CON-SL-ZA-3240 |  | 64d |
|  | 13 | **Install pole** |  | 2026-11-07 | 2026-11-30 |  |  |  |
| SDR-2-CON-SL-ZA-3250 |  | Install Pole | 21d | 2026-11-07 | 2026-11-30 | SDR-2-CON-SL-ZA-3240, SDR-2-CON-SL-ZA-3260 FS+7d |  | 64d |
|  | 6 | **Street Lighting IN ( PH2-G-MCE0 )** |  | 2026-07-04 | 2026-12-15 |  |  |  |
|  | 10 | **Excavation** |  | 2026-07-04 | 2026-10-05 |  |  |  |

| ID | WBS | Task | Duration | Start | Finish | Predecessors | Complete | Total float |
| --- | --- | --- | --- | --- | --- | --- | --- | --- |
| SDR-2-CON-SL-ZA-3270 |  | Excavation for LV Cable drawpits & trenches | 21d | 2026-07-04 A | 2026-10-05 | SDR-2-CON-SL-ZA-3590 FF, SDR-2-CON-SL-ZA-2950 FF | 76% | 39d |
|  | 11 | **Install Footings** |  | 2026-08-13 | 2026-10-05 |  |  |  |
| SDR-2-CON-SL-ZA-3280 |  | Install Footings | 21d | 2026-08-13 A | 2026-10-05 | SDR-2-CON-SL-ZA-3270 FF | 60% | 40d |
|  | 12 | **Backfilling** |  | 2026-10-06 | 2026-10-28 |  |  |  |
| SDR-2-CON-SL-ZA-3300 |  | Backfilling over LV Cables of Street lighting | 20d | 2026-10-06 | 2026-10-28 | SDR-2-CON-SL-ZA-3280 |  | 40d |
|  | 13 | **Install pole** |  | 2026-11-22 | 2026-12-15 |  |  |  |
| SDR-2-CON-SL-ZA-3290 |  | Install Pole | 21d | 2026-11-22 | 2026-12-15 | SDR-2-CON-CC-ZG-1610, SDR-2-CON-SL-ZA-3300 FS+10d |  | 30d |
|  | 7 | **Street Lighting IN ( PH2-G-MCF0 )** |  | 2026-07-04 | 2026-12-03 |  |  |  |
|  | 10 | **Excavation** |  | 2026-07-04 | 2026-10-05 |  |  |  |
| SDR-2-CON-SL-ZA-3310 |  | Excavation for LV Cable drawpits & trenches | 21d | 2026-07-04 A | 2026-10-05 | SDR-2-CON-SL-ZA-3230 FF, SDR-2-CON-SL-ZA-3270 FF | 76% | 39d |
|  | 11 | **Install Footings** |  | 2026-08-13 | 2026-10-05 |  |  |  |
| SDR-2-CON-SL-ZA-3320 |  | Install Footings | 20d | 2026-08-13 A | 2026-10-05 | SDR-2-CON-SL-ZA-3310 FF | 60% | 51d |
|  | 12 | **Backfilling** |  | 2026-10-06 | 2026-10-28 |  |  |  |
| SDR-2-CON-SL-ZA-3340 |  | Backfilling over LV Cables of Street lighting | 20d | 2026-10-06 | 2026-10-28 | SDR-2-CON-SL-ZA-3320 |  | 51d |
|  | 13 | **Install pole** |  | 2026-11-10 | 2026-12-03 |  |  |  |
| SDR-2-CON-SL-ZA-3330 |  | Install Pole | 21d | 2026-11-10 | 2026-12-03 | SDR-2-CON-SL-ZA-3340 FS+10d |  | 51d |
|  | 4 | **Street Lighting IN ( PH2-G-MCG0 )** |  | 2026-07-04 | 2026-12-03 |  |  |  |
|  | 10 | **Excavation** |  | 2026-07-04 | 2026-10-05 |  |  |  |
| SDR-2-CON-SL-ZA-3350 |  | Excavation for LV Cable drawpits & trenches | 21d | 2026-07-04 A | 2026-10-05 | SDR-2-CON-SL-ZA-3310 FF | 76% | 39d |
|  | 11 | **Install Footings** |  | 2026-08-13 | 2026-10-05 |  |  |  |
| SDR-2-CON-SL-ZA-3360 |  | Install Footings | 20d | 2026-08-13 A | 2026-10-05 | SDR-2-CON-SL-ZA-3350 FF | 62% | 51d |
|  | 12 | **Backfilling** |  | 2026-10-06 | 2026-10-28 |  |  |  |
| SDR-2-CON-SL-ZA-3380 |  | Backfilling over LV Cables of Street lighting | 20d | 2026-10-06 | 2026-10-28 | SDR-2-CON-SL-ZA-3360 |  | 51d |
|  | 13 | **Install pole** |  | 2026-11-10 | 2026-12-03 |  |  |  |
| SDR-2-CON-SL-ZA-3370 |  | Install Pole | 21d | 2026-11-10 | 2026-12-03 | SDR-2-CON-SL-ZA-3380 FS+10d |  | 51d |
|  | 1 | **Street Lighting IN ( PH2-G-MCZ0 )** |  | 2026-07-01 | 2026-10-05 |  |  |  |
|  | 10 | **Excavation** |  | 2026-07-01 | 2026-10-05 |  |  |  |
| SDR-2-CON-SL-ZA-3390 |  | Excavation for LV Cable drawpits & trenches | 21d | 2026-07-01 A | 2026-10-05 | SDR-2-CON-SL-ZA-3350 FF | 75% | 39d |
|  | 11 | **Install Footings** |  | 2026-08-13 | 2026-10-05 |  |  |  |
| SDR-2-CON-SL-ZA-3400 |  | Install Footings | 21d | 2026-08-13 A | 2026-10-05 | SDR-2-CON-SL-ZA-3390 FF | 60% | 102d |
|  | 12 | **Backfilling** |  | 2026-07-20 | 2026-10-05 |  |  |  |
| SDR-2-CON-SL-ZA-3420 |  | Backfilling over LV Cables of Street lighting | 21d | 2026-07-20 A | 2026-10-05 | SDR-2-CON-SL-ZA-3400 FF | 50% | 102d |
|  | 13 | **Install pole** |  | 2026-07-30 | 2026-10-05 |  |  |  |
| SDR-2-CON-SL-ZA-3410 |  | Install Pole | 21d | 2026-07-30 A | 2026-10-05 | SDR-2-CON-SL-ZA-3420 FF | 50% | 102d |
|  | 10 | **Lighting Pole Panels** |  | 2026-10-05 | 2027-01-06 |  |  |  |
|  | 1 | **Excavation** |  | 2026-10-05 | 2026-10-28 |  |  |  |
| SDR-2-CON-SL-ZA-3430 |  | Street Lighting Panels Excavation | 21d | 2026-10-05 | 2026-10-28 | SDR-2-CON-SL-ZA-3390 SS+5d |  | 39d |
|  | 2 | **Install Footings** |  | 2026-10-29 | 2026-11-19 |  |  |  |
| SDR-2-CON-SL-ZA-3440 |  | Installation Footings Street Lighting Panels | 19d | 2026-10-29 | 2026-11-19 | SDR-2-CON-SL-ZA-3430 |  | 86d |
|  | 3 | **Backfilling** |  | 2026-11-21 | 2026-12-13 |  |  |  |
| SDR-2-CON-SL-ZA-3450 |  | Street Lighting Panels Backfilling | 20d | 2026-11-21 | 2026-12-13 | SDR-2-CON-SL-ZA-3440 |  | 86d |
|  | 4 | **Install pole** |  | 2026-12-14 | 2027-01-06 |  |  |  |
| SDR-2-CON-SL-ZA-3460 |  | Street Lighting Panels Installation | 21d | 2026-12-14 | 2027-01-06 | SDR-2-CON-SL-ZA-3450 |  | 86d |
|  | 11 | **Ring Main Unit** |  | 2026-10-29 | 2027-01-02 |  |  |  |
|  | 1 | **Leveling** |  | 2026-10-29 | 2026-11-21 |  |  |  |
| SDR-2-CON-SL-ZA-3470 |  | Ring Main Unit leveling | 20d | 2026-10-29 | 2026-11-21 | SDR-2-CON-SL-ZA-3430, SDR-2-CON-SL-ZA-2660 SS |  | 39d |
|  | 2 | **Lean Concrete** |  | 2026-11-22 | 2026-12-09 |  |  |  |
| SDR-2-CON-SL-ZA-3480 |  | Ring Main Unit Lean Concrete | 16d | 2026-11-22 | 2026-12-09 | SDR-2-CON-SL-ZA-3470 |  | 39d |
|  | 3 | **Installation** |  | 2026-12-10 | 2027-01-02 |  |  |  |
| SDR-2-CON-SL-ZA-3490 |  | Ring Main Unit installation for Street Lighting | 20d | 2026-12-10 | 2027-01-02 | SDR-2-CON-SL-ZA-3480 |  | 39d |
|  | 12 | **Feeder Pillars** |  | 2026-11-01 | 2027-01-09 |  |  |  |
|  | 1 | **Leveling** |  | 2026-11-01 | 2026-11-23 |  |  |  |
| SDR-2-CON-SL-ZA-3500 |  | Feeder Pillars Leveling | 20d | 2026-11-01 | 2026-11-23 | SDR-2-CON-SL-ZA-2670 SS |  | 41d |
|  | 2 | **Lean Concrete** |  | 2026-11-24 | 2026-12-16 |  |  |  |
| SDR-2-CON-SL-ZA-3510 |  | Feeder Pillars Lean Concrete | 20d | 2026-11-24 | 2026-12-16 | SDR-2-CON-SL-ZA-3500 |  | 41d |
|  | 3 | **Installation** |  | 2026-12-17 | 2027-01-09 |  |  |  |
| SDR-2-CON-SL-ZA-3520 |  | Feeder Pillars Installation | 20d | 2026-12-17 | 2027-01-09 | SDR-2-CON-SL-ZA-3510 |  | 41d |
|  | 13 | **KWH Frame** |  | 2026-12-05 | 2027-02-11 |  |  |  |
|  | 1 | **Leveling** |  | 2026-12-05 | 2026-12-27 |  |  |  |
| SDR-2-CON-SL-ZA-3530 |  | KWH meter mounting frame Leveling | 20d | 2026-12-05 | 2026-12-27 | SDR-2-CON-SL-ZA-2680 SS |  | 18d |
|  | 2 | **Lean Concrete** |  | 2026-12-28 | 2027-01-19 |  |  |  |
| SDR-2-CON-SL-ZA-3540 |  | KWH meter mounting frame Lean Concrete | 20d | 2026-12-28 | 2027-01-19 | SDR-2-CON-SL-ZA-3530 |  | 18d |
|  | 3 | **Installation** |  | 2027-01-20 | 2027-02-11 |  |  |  |
| SDR-2-CON-SL-ZA-3550 |  | KWH meter mounting frame installation | 20d | 2027-01-20 | 2027-02-11 | SDR-2-CON-SL-ZA-3540 |  | 18d |
|  | 14 | **Street Lighting Sub-station** |  | 2026-12-06 | 2027-02-24 |  |  |  |
|  | 1 | **Leveling** |  | 2026-12-06 | 2026-12-28 |  |  |  |
| SDR-2-CON-SL-ZA-3560 |  | Unit Substation Leveling | 20d | 2026-12-06 | 2026-12-28 | SDR-2-CON-SL-ZA-2690 SS |  | 8d |
|  | 2 | **Lean Concrete** |  | 2026-12-29 | 2027-01-19 |  |  |  |
| SDR-2-CON-SL-ZA-3570 |  | Unit Substation Lean Concrete | 19d | 2026-12-29 | 2027-01-19 | SDR-2-CON-SL-ZA-3560 |  | 8d |
|  | 3 | **Installation** |  | 2027-02-01 | 2027-02-24 |  |  |  |

| ID | WBS | Task | Duration | Start | Finish | Predecessors | Complete | Total float |
| --- | --- | --- | --- | --- | --- | --- | --- | --- |
| SDR-2-CON-SL-ZA-3580 |  | Unit Substation Install for Street Lighting | 20d | 2027-02-01 | 2027-02-24 | SDR-2-CON-SL-ZA-3570 FS+10d |  | 8d |
|  | 2 | **MV Network** |  | 2026-07-19 | 2026-11-09 |  |  |  |
|  | 1 | **LOOP 1** |  | 2026-07-19 | 2026-11-09 |  |  |  |
|  | 6 | **Excavation** |  | 2026-07-19 | 2026-10-05 |  |  |  |
| SDR-2-CON-MV-ZA-1280 |  | Excavation Works | 21d | 2026-07-19 A | 2026-10-05 | SDR-2-CON-SL-ZA-1000 FF | 50% | 68d |
|  | 7 | **Pipe laying** |  | 2026-08-04 | 2026-10-05 |  |  |  |
| SDR-2-CON-MV-ZA-1290 |  | Pipe Laying | 21d | 2026-08-04 A | 2026-10-05 | SDR-2-CON-MV-ZA-1280 FF | 50% | 72d |
|  | 8 | **Backfilling** |  | 2026-08-08 | 2026-10-05 |  |  |  |
| SDR-2-CON-MV-ZA-1310 |  | Backfilling Works | 12d | 2026-08-08 A | 2026-10-05 | SDR-2-CON-MV-ZA-1290 FF | 25% | 72d |
|  | 9 | **Pulling Cable** |  | 2026-10-18 | 2026-11-09 |  |  |  |
| SDR-2-CON-MV-ZA-1300 |  | Pulling Cable | 20d | 2026-10-18 | 2026-11-09 | SDR-2-CON-MV-ZA-1290, SDR-2-CON-MV-ZA-1310 FS+10d |  | 72d |
|  | 2 | **LOOP 2** |  | 2026-08-01 | 2026-11-09 |  |  |  |
|  | 6 | **Excavation** |  | 2026-08-01 | 2026-10-05 |  |  |  |
| SDR-2-CON-MV-ZA-1320 |  | Excavation Works | 21d | 2026-08-01 A | 2026-10-05 | SDR-2-CON-MV-ZA-1280 FF | 50% | 68d |
|  | 7 | **Pipe laying** |  | 2026-08-04 | 2026-10-05 |  |  |  |
| SDR-2-CON-MV-ZA-1330 |  | Pipe Laying | 20d | 2026-08-04 A | 2026-10-05 | SDR-2-CON-MV-ZA-1320 FF | 50% | 68d |
|  | 8 | **Backfilling** |  | 2026-08-08 | 2026-10-05 |  |  |  |
| SDR-2-CON-MV-ZA-1350 |  | Backfilling Works | 20d | 2026-08-08 A | 2026-10-05 | SDR-2-CON-MV-ZA-1330 FF | 25% | 68d |
|  | 9 | **Pulling Cable** |  | 2026-10-18 | 2026-11-09 |  |  |  |
| SDR-2-CON-MV-ZA-1340 |  | Pulling Cable | 20d | 2026-10-18 | 2026-11-09 | SDR-2-CON-MV-ZA-1330, SDR-2-CON-MV-ZA-1350 FS+10d |  | 68d |
|  | 3 | **TELECOMMUNICATIONS Works** |  | 2026-07-01 | 2026-11-21 |  |  |  |
|  | 5 | **TELECOMMUNICATION IN ( PH2-G-MCA0 )** |  | 2026-07-01 | 2026-11-21 |  |  |  |
|  | 3 | **Ducts** |  | 2026-07-01 | 2026-11-21 |  |  |  |
|  | 2 | **Excavation** |  | 2026-07-01 | 2026-10-05 |  |  |  |
| SDR-2-CON-TE-ZA-4200 |  | Excavation for telecom crossing ducts & trenches | 21d | 2026-07-01 A | 2026-10-05 | SDR-2-CON-SL-ZA-1000 FF | 52% | 58d |
|  | 5 | **Pipe laying** |  | 2026-08-13 | 2026-10-05 |  |  |  |
| SDR-2-CON-TE-ZA-4210 |  | HDPE Pipes for Telecom Installation | 18d | 2026-08-13 A | 2026-10-05 | SDR-2-CON-TE-ZA-4200 FF | 52% | 58d |
|  | 6 | **Backfilling** |  | 2026-10-06 | 2026-10-28 |  |  |  |
| SDR-2-CON-TE-ZA-4220 |  | Backfilling over HDPE Telecom Pipes | 20d | 2026-10-06 | 2026-10-28 | SDR-2-CON-TE-ZA-4210 |  | 58d |
|  | 7 | **Pulling Cable** |  | 2026-10-29 | 2026-11-21 |  |  |  |
| SDR-2-CON-TE-ZA-4270 |  | Pulling Cable | 20d | 2026-10-29 | 2026-11-21 | SDR-2-CON-TE-ZA-4220 |  | 58d |
|  | 4 | **Manholes** |  | 2026-08-15 | 2026-10-28 |  |  |  |
|  | 1 | **Excavation** |  | 2026-08-15 | 2026-10-05 |  |  |  |
| SDR-2-CON-TE-ZA-4230 |  | Excavation for Telecom Manholes | 21d | 2026-08-15 A | 2026-10-05 | SDR-2-CON-TE-ZA-4200 FF | 60% | 78d |
|  | 2 | **Bedding Work** |  | 2026-08-24 | 2026-10-05 |  |  |  |
| SDR-2-CON-TE-ZA-4280 |  | Sand bedding for Telecom Manhole | 17d | 2026-08-24 A | 2026-10-05 | SDR-2-CON-TE-ZA-4230 FF | 25% | 78d |
|  | 3 | **Install Manholes** |  | 2026-08-15 | 2026-10-05 |  |  |  |
| SDR-2-CON-TE-ZA-4240 |  | Installation of Telecom Manhole | 19d | 2026-08-15 A | 2026-10-05 | SDR-2-CON-TE-ZA-4230 FF, SDR-2-CON-TE-ZA-4280 FF | 50% | 78d |
|  | 4 | **Testting** |  | 2026-09-02 | 2026-10-05 |  |  |  |
| SDR-2-CON-TE-ZA-4250 |  | Telecom Manhole finishing works | 7d | 2026-09-02 A | 2026-10-05 | SDR-2-CON-TE-ZA-4240 FF | 25% | 78d |
|  | 5 | **Backfilling** |  | 2026-10-06 | 2026-10-28 |  |  |  |
| SDR-2-CON-TE-ZA-4260 |  | Backfilling over Telecom Manhole | 20d | 2026-10-06 | 2026-10-28 | SDR-2-CON-TE-ZA-4250 |  | 78d |
|  | 6 | **TELECOMMUNICATION IN ( PH2-G-MCE0 )** |  | 2026-07-06 | 2026-11-07 |  |  |  |
|  | 3 | **Ducts** |  | 2026-07-06 | 2026-10-05 |  |  |  |
|  | 2 | **Excavation** |  | 2026-07-06 | 2026-07-20 |  |  |  |
| SDR-2-CON-TE-ZA-4290 |  | Excavation for telecom crossing ducts & trenches | 21d | 2026-07-06 A | 2026-07-20 A | SDR-2-CON-SL-ZA-1000 SS | 100% |  |
|  | 5 | **Pipe laying** |  | 2026-07-16 | 2026-10-05 |  |  |  |
| SDR-2-CON-TE-ZA-4300 |  | HDPE Pipes for Telecom Installation | 20d | 2026-07-16 A | 2026-10-05 | SDR-2-CON-TE-ZA-4290 | 50% | 77d |
|  | 6 | **Backfilling** |  | 2026-07-20 | 2026-10-05 |  |  |  |
| SDR-2-CON-TE-ZA-4310 |  | Backfilling over HDPE Telecom Pipes | 20d | 2026-07-20 A | 2026-10-05 | SDR-2-CON-TE-ZA-4300 FF | 50% | 77d |
|  | 7 | **Pulling Cable** |  | 2026-07-16 | 2026-10-05 |  |  |  |
| SDR-2-CON-TE-ZA-4360 |  | Pulling Cable | 20d | 2026-07-16 A | 2026-10-05 | SDR-2-CON-TE-ZA-4310 FF | 50% | 77d |
|  | 4 | **Manholes** |  | 2026-08-15 | 2026-11-07 |  |  |  |
|  | 1 | **Excavation** |  | 2026-08-15 | 2026-10-05 |  |  |  |
| SDR-2-CON-TE-ZA-4320 |  | Excavation for Telecom Manholes | 21d | 2026-08-15 A | 2026-10-05 | SDR-2-CON-TE-ZA-4290 SS | 55% | 70d |
|  | 2 | **Bedding Work** |  | 2026-08-17 | 2026-10-05 |  |  |  |
| SDR-2-CON-TE-ZA-4370 |  | Sand bedding for Telecom Manhole | 15d | 2026-08-17 A | 2026-10-05 | SDR-2-CON-TE-ZA-4320 FF | 50% | 70d |
|  | 3 | **Install Manholes** |  | 2026-08-19 | 2026-10-05 |  |  |  |
| SDR-2-CON-TE-ZA-4330 |  | Installation of Telecom Manhole | 19d | 2026-08-19 A | 2026-10-05 | SDR-2-CON-TE-ZA-4320 FF, SDR-2-CON-TE-ZA-4370 FF | 50% | 70d |
|  | 4 | **Testting** |  | 2026-10-06 | 2026-10-13 |  |  |  |
| SDR-2-CON-TE-ZA-4340 |  | Telecom Manhole finishing works | 7d | 2026-10-06 | 2026-10-13 | SDR-2-CON-TE-ZA-4330 |  | 70d |
|  | 5 | **Backfilling** |  | 2026-10-14 | 2026-11-07 |  |  |  |
| SDR-2-CON-TE-ZA-4350 |  | Backfilling over Telecom Manhole | 21d | 2026-10-14 | 2026-11-07 | SDR-2-CON-TE-ZA-4340 |  | 70d |
|  | 7 | **TELECOMMUNICATION IN ( PH2-G-MCF0 )** |  | 2026-07-06 | 2026-11-05 |  |  |  |
|  | 3 | **Ducts** |  | 2026-07-06 | 2026-10-05 |  |  |  |
|  | 2 | **Excavation** |  | 2026-07-06 | 2026-10-05 |  |  |  |
| SDR-2-CON-TE-ZA-4380 |  | Excavation for telecom crossing ducts & trenches | 21d | 2026-07-06 A | 2026-10-05 | SDR-2-CON-SL-ZA-1000 FF, SDR-2-CON-TE-ZA-4320 FF | 50% | 75d |
|  | 5 | **Pipe laying** |  | 2026-07-16 | 2026-10-05 |  |  |  |
| SDR-2-CON-TE-ZA-4390 |  | HDPE Pipes for Telecom Installation | 19d | 2026-07-16 A | 2026-10-05 | SDR-2-CON-TE-ZA-4380 FF | 50% | 102d |
|  | 6 | **Backfilling** |  | 2026-08-16 | 2026-10-05 |  |  |  |

| ID | WBS | Task | Duration | Start | Finish | Predecessors | Complete | Total float |
| --- | --- | --- | --- | --- | --- | --- | --- | --- |
| SDR-2-CON-TE-ZA-4400 |  | Backfilling over HDPE Telecom Pipes | 20d | 2026-08-16 A | 2026-10-05 | SDR-2-CON-TE-ZA-4390 FF | 50% | 102d |
|  | 7 | **Pulling Cable** |  | 2026-07-16 | 2026-10-05 |  |  |  |
| SDR-2-CON-TE-ZA-4450 |  | Pulling Cable | 21d | 2026-07-16 A | 2026-10-05 | SDR-2-CON-TE-ZA-4400 FF | 50% | 102d |
|  | 4 | **Manholes** |  | 2026-08-15 | 2026-11-05 |  |  |  |
|  | 1 | **Excavation** |  | 2026-08-15 | 2026-10-05 |  |  |  |
| SDR-2-CON-TE-ZA-4410 |  | Excavation for Telecom Manholes | 21d | 2026-08-15 A | 2026-10-05 | SDR-2-CON-TE-ZA-4380 FF | 56% | 75d |
|  | 2 | **Bedding Work** |  | 2026-08-17 | 2026-10-05 |  |  |  |
| SDR-2-CON-TE-ZA-4460 |  | Sand bedding for Telecom Manhole | 20d | 2026-08-17 A | 2026-10-05 | SDR-2-CON-TE-ZA-4410 FF | 50% | 75d |
|  | 3 | **Install Manholes** |  | 2026-08-19 | 2026-10-05 |  |  |  |
| SDR-2-CON-TE-ZA-4420 |  | Installation of Telecom Manhole | 19d | 2026-08-19 A | 2026-10-05 | SDR-2-CON-TE-ZA-4410 FF, SDR-2-CON-TE-ZA-4460 FF | 50% | 75d |
|  | 4 | **Testting** |  | 2026-10-06 | 2026-10-13 |  |  |  |
| SDR-2-CON-TE-ZA-4430 |  | Telecom Manhole finishing works | 7d | 2026-10-06 | 2026-10-13 | SDR-2-CON-TE-ZA-4420 |  | 75d |
|  | 5 | **Backfilling** |  | 2026-10-14 | 2026-11-05 |  |  |  |
| SDR-2-CON-TE-ZA-4440 |  | Backfilling over Telecom Manhole | 20d | 2026-10-14 | 2026-11-05 | SDR-2-CON-TE-ZA-4430 |  | 75d |
|  | 4 | **TELECOMMUNICATION IN ( PH2-G-MCG0 )** |  | 2026-07-06 | 2026-11-18 |  |  |  |
|  | 3 | **Ducts** |  | 2026-07-06 | 2026-10-05 |  |  |  |
|  | 2 | **Excavation** |  | 2026-07-06 | 2026-10-05 |  |  |  |
| SDR-2-CON-TE-ZA-4470 |  | Excavation for telecom crossing ducts & trenches | 21d | 2026-07-06 A | 2026-10-05 | SDR-2-CON-SL-ZA-1000 FF | 50% | 77d |
|  | 5 | **Pipe laying** |  | 2026-07-15 | 2026-10-05 |  |  |  |
| SDR-2-CON-TE-ZA-4480 |  | HDPE Pipes for Telecom Installation | 18d | 2026-07-15 A | 2026-10-05 | SDR-2-CON-TE-ZA-4470 FF | 55% | 77d |
|  | 6 | **Backfilling** |  | 2026-08-16 | 2026-10-05 |  |  |  |
| SDR-2-CON-TE-ZA-4490 |  | Backfilling over HDPE Telecom Pipes | 20d | 2026-08-16 A | 2026-10-05 | SDR-2-CON-TE-ZA-4480 FF | 55% | 77d |
|  | 7 | **Pulling Cable** |  | 2026-07-14 | 2026-10-05 |  |  |  |
| SDR-2-CON-TE-ZA-4540 |  | Pulling Cable | 20d | 2026-07-14 A | 2026-10-05 | SDR-2-CON-TE-ZA-4490 FF | 55% | 77d |
|  | 4 | **Manholes** |  | 2026-08-15 | 2026-11-18 |  |  |  |
|  | 1 | **Excavation** |  | 2026-08-15 | 2026-10-05 |  |  |  |
| SDR-2-CON-TE-ZA-4500 |  | Excavation for Telecom Manholes | 21d | 2026-08-15 A | 2026-10-05 | SDR-2-CON-TE-ZA-4470 FF | 76% | 128d |
|  | 2 | **Bedding Work** |  | 2026-08-17 | 2026-10-05 |  |  |  |
| SDR-2-CON-TE-ZA-4550 |  | Sand bedding for Telecom Manhole | 15d | 2026-08-17 A | 2026-10-05 | SDR-2-CON-TE-ZA-4500 FF | 75% | 128d |
|  | 3 | **Install Manholes** |  | 2026-08-19 | 2026-10-05 |  |  |  |
| SDR-2-CON-TE-ZA-4510 |  | Installation of Telecom Manhole | 20d | 2026-08-19 A | 2026-10-05 | SDR-2-CON-TE-ZA-4500 FF, SDR-2-CON-TE-ZA-4550 FF | 75% | 128d |
|  | 4 | **Testting** |  | 2026-10-06 | 2026-10-13 |  |  |  |
| SDR-2-CON-TE-ZA-4520 |  | Telecom Manhole finishing works | 7d | 2026-10-06 | 2026-10-13 | SDR-2-CON-TE-ZA-4510 |  | 128d |
|  | 5 | **Backfilling** |  | 2026-10-26 | 2026-11-18 |  |  |  |
| SDR-2-CON-TE-ZA-4530 |  | Backfilling over Telecom Manhole | 21d | 2026-10-26 | 2026-11-18 | SDR-2-CON-TE-ZA-4520 FS+10d |  | 128d |
|  | LI | **Landscape & Irrigation Works** |  | 2026-08-01 | 2027-07-05 |  |  |  |
|  | ZA | **ZONE A** |  | 2026-08-01 | 2027-06-30 |  |  |  |
|  | 2 | **IRRIGATION WORKS** |  | 2026-08-01 | 2027-06-30 |  |  |  |
|  | 1 | **IRRIGATION WORKS IN ( PH2-COL-MC10 )** |  | 2026-08-01 | 2027-06-21 |  |  |  |
|  | 7 | **Pre install** |  | 2026-08-01 | 2027-05-08 |  |  |  |
| SDR-2-CON-IR-ZA-1000 |  | Pre Install for irrigation Works | 19d | 2026-08-01 A | 2027-05-08 | SDR-2-CON-SE-ZA-1490, SDR-2-CON-SE-ZA-1550, SDR-2-CON-SE-ZA-1560, SDR-2-CON-SE-ZA-1620, SDR-2-CON-SE-ZA-1590, SDR-2-CON-SE-ZA-1650, SDR-2-CON-SE-ZA-1660, SDR-2-CON-SE-ZA-1720, SDR-2-CON-SE-ZA-1690, SDR-2-CON-SE-ZA-1750, SDR-2-CON-SE-ZA-1760, SDR-2-CON-SE-ZA-1820, SDR-2-CON-SE-ZA-1790, SDR-2-CON-SE-ZA-1850, SDR-2-CON-SE-ZA-1860, SDR-2-CON-SE-ZA-1920, SDR-2-CON-SE-ZA-1890, SDR-2-CON-SE-ZA-1950, SDR-2-CON-SE-ZA-1960, SDR-2-CON-SE-ZA-2020, SDR-2-CON-SE-ZA-1990, SDR-2-CON-SE-ZA-2050, SDR-2-CON-SE-ZA-2060, SDR-2-CON-SE-ZA-2120, SDR-2-CON-SE-ZA-2070, SDR-2-CON-SE-ZA-2080, SDR-2-CON-SE-ZA-2130, SDR-2-CON-SE-ZA-2090, SDR-2-CON-SE-ZA-2150, SDR-2-CON-SE-ZA-2100, SDR-2-CON-SE-ZA-2140, SDR-2-CON-SE-ZA-2160, SDR-2-CON-SE-ZA-2220, SDR-2-CON-SE-ZA-2170, SDR-2-CON-SE-ZA-2230, SDR-2-CON-SE-ZA-2190, SDR-2-CON-SE-ZA-2250, SDR-2-CON-SE-ZA-2200, SDR-2-CON-SE-ZA-2240, SDR-2-CON-SE-ZA-2260, SDR-2-CON-SE-ZA-2320, SDR-2-CON-SE-ZA-2270, SDR-2-CON-SE-ZA-2280, SDR-2-CON-SE-ZA-2330, SDR-2-CON-SE-ZA-2290, SDR-2-CON-SE-ZA-2350, SDR-2-CON-SE-ZA-2300, SDR-2-CON-SE-ZA-2340, SDR-2-CON-SE-ZA-2360, SDR-2-CON-SE-ZA-2420, SDR-2-CON-SE-ZA-2370, SDR-2-CON-SE-ZA-2380, SDR-2-CON-SE-ZA-2430, SDR-2-CON-SE-ZA-2390, SDR-2-CON-SE-ZA-2450, SDR-2-CON-SE-ZA-2400, SDR-2-CON-SE-ZA-2440, SDR-2-CON-PW-ZG-1000, SDR-2-CON-PW-ZA-2910, SDR-2-CON-PW-ZA-3010, SDR-2-CON-PW-ZA-3020, SDR-2-CON-PW-ZA-3110, SDR-2-CON-PW-ZA-3120, SDR-2-CON-PW-ZA-2560, SDR-2-CON-TE-ZA-4290, SDR-2-CON-RW-ZA-1720, SDR-2-CON-RW-ZA-1720 FF, SDR-2-CON-ST-ZA-6120, SDR-2-CON-SE-ZA-1010 FF, SDR-2-CON-SE-ZA-1020 FF, SDR-2-CON-SE-ZA-1040 FF, SDR-2-CON-SE-ZA-1050 FF, SDR-2-CON-SE-ZA-1470 FF, SDR-2-CON-SE-ZA-1480 FF, SDR-2-CON-SE-ZA-1500 FF, SDR-2-CON-SE-ZA-1510 FF, SDR-2-CON-SE-ZA-1570 FF, SDR-2-CON-SE-ZA-1580 FF, SDR-2-CON-SE-ZA-1600 FF, SDR-2-CON-SE-ZA-1610 FF, SDR-2-CON-SE-ZA-1670 FF, SDR-2-CON-SE-ZA-1680 FF, SDR-2-CON-SE-ZA-1700 FF, SDR-2-CON-SE-ZA-1710 FF, SDR-2-CON-SE-ZA-1770 FF, SDR-2-CON-SE-ZA-1780 FF, SDR-2-CON-SE-ZA-1800 FF, SDR-2-CON-SE-ZA-1810 FF, SDR-2-CON-SE-ZA-1870 FF, SDR-2-CON-SE-ZA-1880 FF, SDR-2-CON-SE-ZA-1900 FF, SDR-2-CON-SE-ZA-1910 FF, SDR-2-CON-SE-ZA-1970 FF, SDR-2-CON-SE-ZA-2000 FF, SDR-2-CON-SE-ZA-2110 FF, SDR-2-CON-SE-ZA-2180 FF, SDR-2-CON-SE-ZA-2210 FF, SDR-2-CON-SE-ZA-2310 FF, SDR-2-CON-SE-ZA-2410 FF, SDR-2-CON-TS-ZA-1000 FF, SDR-2-CON-TS-ZA-3100 FF, SDR-2-CON-TS-ZA-3130 FF, SDR-2-CON-TS-ZA-3110 FF, SDR-2-CON-TS-ZA-3120 FF, SDR-2-CON-TS-ZA-3140 FF, SDR-2-CON-TS-ZA-2300 FF, SDR-2-CON-TS-ZA-2380 FF, SDR-2-CON-TS-ZA-2310 FF, SDR-2-CON-TS-ZA-2400 FF, SDR-2-CON-TS-ZA-2900 FF, SDR-2-CON-TS-ZA-3000 FF, SDR-2-CON-TS-ZA-2500 FF, SDR-2-CON-PW-ZA-1000 FF, SDR-2-CON-PW-ZA-2200 FF, SDR-2-CON-PW-ZA-1010 FF, SDR-2-CON-PW-ZA-2260 FF, SDR-2-CON-PW-ZA-2340 FF, SDR-2-CON-PW-ZA-2270 FF, SDR-2-CON-PW-ZA-2330 FF, SDR-2-CON-PW-ZA-2350 FF, SDR-2-CON-PW-ZG-1500 FF, SDR-2-CON-PW-ZG-1010 FF, SDR-2-CON-PW-ZA-2940 FF, SDR-2-CON-PW-ZA-2920 FF, SDR-2-CON-PW-ZA-3040 FF, SDR-2-CON-PW-ZA-3140 FF, SDR-2-CON-PW-ZA-2640 FF, SDR-2-CON-PW-ZA-2570 FF, SDR-2-CON-SL-ZA-1000 FF, SDR-2-CON-SL-ZA-1010 FF, SDR-2-CON-SL-ZA-2870 FF, SDR-2-CON-SL-ZA-2880 FF, SDR-2-CON-SL-ZA-1300 FF, SDR-2-CON-SL-ZA-1310 FF, SDR-2-CON-SL-ZA-2950 FF, SDR-2-CON-SL-ZA-2960 FF, SDR-2-CON-SL-ZA-2990 FF, SDR-2-CON-SL-ZA-3000 FF, SDR-2-CON-SL-ZA-3030 FF, SDR-2-CON-SL-ZA-3040 FF, SDR-2-CON-SL-ZA-3070 FF, SDR-2-CON-SL-ZA-3080 FF, SDR-2-CON-SL-ZA-3110 FF, SDR-2-CON-SL-ZA-3120 FF, SDR-2-CON-SL-ZA-3150 FF, SDR-2-CON-SL-ZA-3160 FF, SDR-2-CON-SL-ZA-3190 FF, SDR-2-CON-SL-ZA-3200 FF, SDR-2-CON-SL-ZA-2910 FF, SDR-2-CON-SL-ZA-2920 FF, SDR-2-CON-MV-ZA-1000 FF, SDR-2-CON-MV-ZA-1070 FF, SDR-2-CON-MV-ZA-1150 FF, SDR-2-CON-MV-ZA-1160 FF, SDR-2-CON-MV-ZA-1170 FF, SDR-2-CON-MV-ZA-1200 FF, SDR-2-CON-MV-ZA-1210 FF, SDR-2-CON-MV-ZA-1240 FF, SDR-2-CON-MV-ZA-1250 FF, SDR-2-CON-TE-ZA-1030 FF, SDR-2-CON-TE-ZA-1850 FF, SDR-2-CON-TE-ZA-3210 FF, SDR-2-CON-TE-ZA-3220 FF, SDR-2-CON-TE-ZA-3230 FF, SDR-2-CON-TE-ZA-3240 FF, SDR-2-CON-TE-ZA-3290 FF, SDR-2-CON-TE-ZA-3250 FF, SDR-2-CON-TE-ZA-3300 FF, SDR-2-CON-TE-ZA-3330 FF, SDR-2-CON-TE-ZA-3390 FF, SDR-2-CON-TE-ZA-3420 FF, SDR-2-CON-TE-ZA-3480 FF, SDR-2-CON-TE-ZA-3490 FF, SDR-2-CON-TE-ZA-3510 FF, SDR-2-CON-TE-ZA-3560 FF, SDR-2-CON-TE-ZA-3570 FF, SDR-2-CON-TE-ZA-3580 FF, SDR-2-CON-TE-ZA-3600 FF, SDR-2-CON-TE-ZA-3650 FF, SDR-2-CON-TE-ZA-3660 FF, SDR-2-CON-TE-ZA-3670 FF, SDR-2-CON-TE-ZA-3750 FF, SDR-2-CON-TE-ZA-3760 FF, SDR-2-CON-TE-ZA-3840 FF, SDR-2-CON-TE-ZA-3850 FF, SDR-2-CON-TE-ZA-3930 FF, SDR-2-CON-TE-ZA-4020 FF, SDR-2-CON-TE-ZA-4110 FF, SDR-2-CON-TE-ZA-4120 FF, SDR-2-CON-TE-ZA-4140 FF, SDR-2-CON-TE-ZA-4190 FF, SDR-2-CON-TE-ZA-4150 FF, SDR-2-CON-SL-ZA-3230 FF, SDR-2-CON-SL-ZA-3240 FF, SDR-2-CON-SL-ZA-3270 FF, SDR-2-CON-SL-ZA-3280 FF, SDR-2-CON-SL-ZA-3310 FF, SDR-2-CON-SL-ZA-3320 FF, SDR-2-CON-SL-ZA-3350 FF, SDR-2-CON-SL-ZA-3360 FF, SDR-2-CON-SL-ZA-3390 FF, SDR-2-CON-SL-ZA-3400 FF, SDR-2-CON-SL-ZA-3420 FF, SDR-2-CON-SL-ZA-3410 FF, SDR-2-CON-MV-ZA-1280 FF, SDR-2-CON-MV-ZA-1290 FF, SDR-2-CON-MV-ZA-1310 FF, SDR-2-CON-MV-ZA-1320 FF, SDR-2-CON-MV-ZA-1330 FF, SDR-2-CON-MV-ZA-1350 FF, SDR-2-CON-TE-ZA-4200 FF, SDR-2-CON-TE-ZA-4210 FF, SDR-2-CON-TE-ZA-4230 FF, SDR-2-CON-TE-ZA-4280 FF, SDR-2-CON-TE-ZA-4240 FF, SDR-2-CON-TE-ZA-4250 FF, SDR-2-CON-TE-ZA-4300 FF, SDR-2-CON-TE-ZA-4310 FF, SDR-2-CON-TE-ZA-4360 FF, SDR-2-CON-TE-ZA-4320 FF, SDR-2-CON-TE-ZA-4370 FF, SDR-2-CON-TE-ZA-4330 FF, SDR-2-CON-TE-ZA-4380 FF, SDR-2-CON-TE-ZA-4390 FF, SDR-2-CON-TE-ZA-4400 FF, SDR-2-CON-TE-ZA-4450 FF, SDR-2-CON-TE-ZA-4410 FF, SDR-2-CON-TE-ZA-4460 FF, SDR-2-CON-TE-ZA-4420 FF, SDR-2-CON-TE-ZA-4470 FF, SDR-2-CON-TE-ZA-4480 FF, SDR-2-CON-TE-ZA-4490 FF, SDR-2-CON-TE-ZA-4540 FF, SDR-2-CON-TE-ZA-4500 FF, SDR-2-CON-TE-ZA-4550 FF, SDR-2-CON-TE-ZA-4510 FF, SDR-2-CON-CC-ZA-1000 FF, SDR-2-CON-CC-ZA-1030 FF, SDR-2-CON-CC-ZA-1080 FF, SDR-2-CON-CC-ZA-1090 FF, SDR-2-CON-CC-ZA-1240 FF, SDR-2-CON-CC-ZA-1250 FF, SDR-2-CON-CC-ZA-1380 FF, SDR-2-CON-CC-ZA-1390 FF, SDR-2-CON-CC-ZA-1670 FF, SDR-2-CON-CC-ZA-1700 FF, SDR-2-CON-CC-ZA-1750 FF, SDR-2-CON-CC-ZA-1790 FF, SDR-2-CON-CC-ZA-1830 FF, SDR-2-CON-ST-ZA-4020 FF, SDR-2-CON-SE-ZA-1430 FF, SDR-2-CON-SE-ZA-1440 FF, SDR-2-CON-SE-ZA-1530 FF, SDR-2-CON-SE-ZA-1540 FF, SDR-2-CON-SE-ZA-1630 FF, SDR-2-CON-SE-ZA-1730 FF, SDR-2-CON-SE-ZA-1740 FF, SDR-2-CON-SE-ZA-1830 FF, SDR-2-CON-SE-ZA-1840 FF, SDR-2-CON-SE-ZA-1930 FF, SDR-2-CON-SE-ZA-1940 FF, SDR-2-CON-SE-ZA-1980 FF, SDR-2-CON-SE-ZA-2030 FF, SDR-2-CON-SE-ZA-2010 FF, SDR-2-CON-SE-ZA-2040 FF, SDR-2-CON-TS-ZA-1900 FF, SDR-2-CON-TS-ZA-1010 FF, SDR-2-CON-TS-ZA-1080 FF, SDR-2-CON-TS-ZA-1910 FF, SDR-2-CON-TS-ZA-1040 FF, SDR-2-CON-TS-ZA-1020 FF, SDR-2-CON-TS-ZA-1050 FF, SDR-2-CON-TS-ZA-1060 FF, SDR-2-CON-TS-ZA-1070 FF, SDR-2-CON-TS-ZA-2200 FF, SDR-2-CON-TS-ZA-2280 FF, SDR-2-CON-TS-ZA-2210 FF, SDR-2-CON-TS-ZA-2270 FF, SDR-2-CON-TS-ZA-2290 FF, SDR-2-CON-TS-ZA-2230 FF, SDR-2-CON-TS-ZA-2240 FF, SDR-2-CON-TS-ZA-2250 FF, SDR-2-CON-TS-ZA-2260 FF, SDR-2-CON-TS-ZA-1180 FF, SDR-2-CON-TS-ZA-1920 FF, SDR-2-CON-TS-ZA-1190 FF, SDR-2-CON-TS-ZA-1260 FF, SDR-2-CON-TS-ZA-1930 FF, SDR-2-CON-TS-ZA-2010 FF, SDR-2-CON-TS-ZA-2000 FF, SDR-2-CON-TS-ZA-2020 FF, SDR-2-CON-TS-ZA-2030 FF, SDR-2-CON-TS-ZA-2040 FF, SDR-2-CON-TS-ZA-1270 FF, SDR-2-CON-TS-ZA-1940 FF, SDR-2-CON-TS-ZA-1280 FF, SDR-2-CON-TS-ZA-1350 FF, SDR-2-CON-TS-ZA-1950 FF, SDR-2-CON-TS-ZA-2060 FF, SDR-2-CON-TS-ZA-2050 FF, SDR-2-CON-TS-ZA-2070 FF, SDR-2-CON-TS-ZA-2080 FF, SDR-2-CON-TS-ZA-2090 FF, SDR-2-CON-TS-ZA-2660 FF, SDR-2-CON-TS-ZA-2650 FF, SDR-2-CON-TS-ZA-2670 FF, SDR-2-CON-TS-ZA-2680 FF, SDR-2-CON-TS-ZA-2690 FF, SDR-2-CON-TS-ZA-2700 FF, SDR-2-CON-TS-ZA-2730 FF, SDR-2-CON-TS-ZA-2710 FF, SDR-2-CON-TS-ZA-2720 FF, SDR-2-CON-TS-ZA-2740 FF, SDR-2-CON-TS-ZA-2760 FF, SDR-2-CON-TS-ZA-2750 FF, SDR-2-CON-TS-ZA-2770 FF, SDR-2-CON-TS-ZA-2780 FF, SDR-2-CON-TS-ZA-2800 FF, SDR-2-CON-TS-ZA-2830 FF, SDR-2-CON-TS-ZA-2810 FF, SDR-2-CON-TS-ZA-2820 FF, SDR-2-CON-TS-ZA-2840 FF, SDR-2-CON-TS-ZA-2860 FF, SDR-2-CON-TS-ZA-2850 FF, SDR-2-CON-TS-ZA-2870 FF, SDR-2-CON-TS-ZA-2880 FF, SDR-2-CON-TS-ZA-2890 FF, SDR-2-CON-TS-ZA-1630 FF, SDR-2-CON-TS-ZA-1960 FF, SDR-2-CON-TS-ZA-1640 FF, SDR-2-CON-TS-ZA-1710 FF, SDR-2-CON-TS-ZA-1970 FF, SDR-2-CON-TS-ZA-2110 FF, SDR-2-CON-TS-ZA-2100 FF, SDR-2-CON-TS-ZA-2120 FF, SDR-2-CON-TS-ZA-2130 FF, SDR-2-CON-TS-ZA-2140 FF, SDR-2-CON-TS-ZA-1720 FF, SDR-2-CON-TS-ZA-1980 FF, SDR-2-CON-TS-ZA-1730 FF, SDR-2-CON-TS-ZA-1800 FF, SDR-2-CON-TS-ZA-1990 FF, SDR-2-CON-TS-ZA-2160 FF, SDR-2-CON-TS-ZA-2150 FF, SDR-2-CON-TS-ZA-2170 FF, SDR-2-CON-TS-ZA-2180 FF, SDR-2-CON-TS-ZA-2190 FF, SDR-2-CON-TS-ZA-3160 FF, SDR-2-CON-TS-ZA-3150 FF, SDR-2-CON-TS-ZA-3170 FF, SDR-2-CON-TS-ZA-3180 FF, SDR-2-CON-TS-ZA-3190 FF, SDR-2-CON-TS-ZA-2370 FF, SDR-2-CON-TS-ZA-2390 FF, SDR-2-CON-TS-ZA-2330 FF, SDR-2-CON-TS-ZA-2320 FF, SDR-2-CON-TS-ZA-2340 FF, SDR-2-CON-TS-ZA-2350 FF, SDR-2-CON-TS-ZA-2360 FF, SDR-2-CON-TS-ZA-2430 FF, SDR-2-CON-TS-ZA-2410 FF, SDR-2-CON-TS-ZA-2420 FF, SDR-2-CON-TS-ZA-2440 FF, SDR-2-CON-TS-ZA-2460 FF, SDR-2-CON-TS-ZA-2450 FF, SDR-2-CON-TS-ZA-2470 FF, SDR-2-CON-TS-ZA-2480 FF, SDR-2-CON-TS-ZA-2490 FF, SDR-2-CON-TS-ZA-2930 FF, SDR-2-CON-TS-ZA-2910 FF, SDR-2-CON-TS-ZA-2920 FF, SDR-2-CON-TS-ZA-2940 FF, SDR-2-CON-TS-ZA-2960 FF, SDR-2-CON-TS-ZA-2950 FF, SDR-2-CON-TS-ZA-2970 FF, SDR-2-CON-TS-ZA-2980 FF, SDR-2-CON-TS-ZA-2990 FF, SDR-2-CON-TS-ZA-3030 FF, SDR-2-CON-TS-ZA-3010 FF, SDR-2-CON-TS-ZA-3020 FF, SDR-2-CON-TS-ZA-3040 FF, SDR-2-CON-TS-ZA-3060 FF, SDR-2-CON-TS-ZA-3050 FF, SDR-2-CON-TS-ZA-2530 FF, SDR-2-CON-TS-ZA-2510 FF, SDR-2-CON-TS-ZA-2520 FF, SDR-2-CON-TS-ZA-2560 FF, SDR-2-CON-TS-ZA-2550 FF, SDR-2-CON-TS-ZA-2570 FF, SDR-2-CON-TS-ZA-2580 FF, SDR-2-CON-TS-ZA-2590 FF, SDR-2-CON-PW-ZA-1080 FF, SDR-2-CON-PW-ZA-2210 FF, SDR-2-CON-PW-ZA-1040 FF, SDR-2-CON-PW-ZA-1020 FF, SDR-2-CON-PW-ZA-1050 FF, SDR-2-CON-PW-ZA-1030 FF, SDR-2-CON-PW-ZA-1070 FF, SDR-2-CON-PW-ZA-2300 FF, SDR-2-CON-PW-ZA-2280 FF, SDR-2-CON-PW-ZA-2310 FF, SDR-2-CON-PW-ZA-2290 FF, SDR-2-CON-PW-ZA-1200 FF, SDR-2-CON-PW-ZA-2220 FF, SDR-2-CON-PW-ZA-1210 FF, SDR-2-CON-PW-ZA-1280 FF, SDR-2-CON-PW-ZA-2230 FF, SDR-2-CON-PW-ZA-2680 FF, SDR-2-CON-PW-ZA-2660 FF, SDR-2-CON-PW-ZA-2690 FF, SDR-2-CON-PW-ZA-2670 FF, SDR-2-CON-PW-ZA-2700 FF, SDR-2-CON-PW-ZA-2710 FF, SDR-2-CON-PW-ZA-2740 FF, SDR-2-CON-PW-ZA-2720 FF, SDR-2-CON-PW-ZA-2730 FF, SDR-2-CON-PW-ZA-2750 FF, SDR-2-CON-PW-ZA-2780 FF, SDR-2-CON-PW-ZA-2760 FF, SDR-2-CON-PW-ZA-2790 FF, SDR-2-CON-PW-ZA-2770 FF, SDR-2-CON-PW-ZA-2800 FF, SDR-2-CON-PW-ZA-1400 FF, SDR-2-CON-PW-ZA-2240 FF, SDR-2-CON-PW-ZA-1410 FF, SDR-2-CON-PW-ZA-1480 FF, SDR-2-CON-PW-ZA-2250 FF, SDR-2-CON-PW-ZA-3230 FF, SDR-2-CON-PW-ZA-3210 FF, SDR-2-CON-PW-ZA-3240 FF, SDR-2-CON-PW-ZA-3220 FF, SDR-2-CON-PW-ZA-3260 FF, SDR-2-CON-PW-ZA-3290 FF, SDR-2-CON-PW-ZA-3270 FF, SDR-2-CON-PW-ZA-3280 FF, SDR-2-CON-PW-ZA-3300 FF, SDR-2-CON-PW-ZA-3330 FF, SDR-2-CON-PW-ZA-3310 FF, SDR-2-CON-PW-ZA-3340 FF, SDR-2-CON-PW-ZA-3320 FF, SDR-2-CON-PW-ZA-3360 FF, SDR-2-CON-PW-ZA-3390 FF, SDR-2-CON-PW-ZA-3370 FF, SDR-2-CON-PW-ZA-3380 FF, SDR-2-CON-PW-ZA-3400 FF, SDR-2-CON-PW-ZA-3460 FF, SDR-2-CON-PW-ZA-3490 FF, SDR-2-CON-PW-ZA-3470 FF, SDR-2-CON-PW-ZA-3480 FF, SDR-2-CON-PW-ZA-3500 FF, SDR-2-CON-PW-ZA-3530 FF, SDR-2-CON-PW-ZA-3510 FF, SDR-2-CON-PW-ZA-3540 FF, SDR-2-CON-PW-ZA-3520 FF, SDR-2-CON-PW-ZA-3550 FF, SDR-2-CON-PW-ZA-3560 FF, SDR-2-CON-PW-ZA-3590 FF, SDR-2-CON-PW-ZA-3570 FF, SDR-2-CON-PW-ZA-3580 FF, SDR-2-CON-PW-ZA-3600 FF, SDR-2-CON-PW-ZA-2810 FF, SDR-2-CON-PW-ZA-2840 FF, SDR-2-CON-PW-ZA-2820 FF, SDR-2-CON-PW-ZA-2830 FF, SDR-2-CON-PW-ZA-2850 FF, SDR-2-CON-PW-ZA-2880 FF, SDR-2-CON-PW-ZA-2860 FF, SDR-2-CON-PW-ZA-2890 FF, SDR-2-CON-PW-ZA-2870 FF, SDR-2-CON-PW-ZA-2900 FF, SDR-2-CON-PW-ZA-2360 FF, SDR-2-CON-PW-ZA-2440 FF, SDR-2-CON-PW-ZA-2370 FF, SDR-2-CON-PW-ZA-2430 FF, SDR-2-CON-PW-ZA-2450 FF, SDR-2-CON-PW-ZA-2400 FF, SDR-2-CON-PW-ZA-2380 FF, SDR-2-CON-PW-ZA-2410 FF, SDR-2-CON-PW-ZA-2390 FF, SDR-2-CON-PW-ZA-2420 FF, SDR-2-CON-PW-ZA-2460 FF, SDR-2-CON-PW-ZA-2540 FF, SDR-2-CON-PW-ZA-2470 FF, SDR-2-CON-PW-ZA-2530 FF, SDR-2-CON-PW-ZA-2500 FF, SDR-2-CON-PW-ZA-2480 FF, SDR-2-CON-PW-ZA-2510 FF, SDR-2-CON-PW-ZA-2490 FF, SDR-2-CON-PW-ZA-2520 FF, SDR-2-CON-PW-ZG-1080 FF, SDR-2-CON-PW-ZG-1510 FF, SDR-2-CON-PW-ZA-3680 FF, SDR-2-CON-PW-ZA-3660 FF, SDR-2-CON-PW-ZA-3690 FF, SDR-2-CON-PW-ZA-3670 FF, SDR-2-CON-PW-ZA-3700 FF, SDR-2-CON-PW-ZA-2930 FF, SDR-2-CON-PW-ZA-2950 FF, SDR-2-CON-PW-ZA-2980 FF, SDR-2-CON-PW-ZA-2960 FF, SDR-2-CON-PW-ZA-2990 FF, SDR-2-CON-PW-ZA-2970 FF, SDR-2-CON-PW-ZA-3030 FF, SDR-2-CON-PW-ZA-3050 FF, SDR-2-CON-PW-ZA-3080 FF, SDR-2-CON-PW-ZA-3060 FF, SDR-2-CON-PW-ZA-3090 FF, SDR-2-CON-PW-ZA-3070 FF, SDR-2-CON-PW-ZA-3100 FF, SDR-2-CON-PW-ZA-3130 FF, SDR-2-CON-PW-ZA-3150 FF, SDR-2-CON-PW-ZA-3180 FF, SDR-2-CON-PW-ZA-3160 FF, SDR-2-CON-PW-ZA-3190 FF, SDR-2-CON-PW-ZA-3170 FF, SDR-2-CON-PW-ZA-3200 FF, SDR-2-CON-PW-ZA-2630 FF, SDR-2-CON-PW-ZA-2650 FF, SDR-2-CON-PW-ZA-2600 FF, SDR-2-CON-PW-ZA-2580 FF, SDR-2-CON-PW-ZA-2610 FF, SDR-2-CON-PW-ZA-2590 FF, SDR-2-CON-PW-ZA-2620 FF, SDR-2-CON-SL-ZA-1110 FF, SDR-2-CON-SL-ZA-1100 FF, SDR-2-CON-SL-ZA-2900 FF, SDR-2-CON-SL-ZA-2890 FF, SDR-2-CON-SL-ZA-1410 FF, SDR-2-CON-SL-ZA-1400 FF, SDR-2-CON-SL-ZA-2980 FF, SDR-2-CON-SL-ZA-2970 FF, SDR-2-CON-SL-ZA-3020 FF, SDR-2-CON-SL-ZA-3010 FF, SDR-2-CON-SL-ZA-3060 FF, SDR-2-CON-SL-ZA-3050 FF, SDR-2-CON-SL-ZA-3100 FF, SDR-2-CON-SL-ZA-3090 FF, SDR-2-CON-SL-ZA-3140 FF, SDR-2-CON-SL-ZA-3130 FF, SDR-2-CON-SL-ZA-3180 FF, SDR-2-CON-SL-ZA-3170 FF, SDR-2-CON-SL-ZA-3220 FF, SDR-2-CON-SL-ZA-3210 FF, SDR-2-CON-SL-ZA-2940 FF, SDR-2-CON-SL-ZA-2930 FF, SDR-2-CON-SL-ZA-2650 FF, SDR-2-CON-SL-ZA-2760 FF, SDR-2-CON-SL-ZA-2770 FF, SDR-2-CON-SL-ZA-2780 FF, SDR-2-CON-SL-ZA-2660 FF, SDR-2-CON-SL-ZA-2790 FF, SDR-2-CON-SL-ZA-2800 FF, SDR-2-CON-SL-ZA-2670 FF, SDR-2-CON-SL-ZA-2810 FF, SDR-2-CON-SL-ZA-2820 FF, SDR-2-CON-SL-ZA-2680 FF, SDR-2-CON-SL-ZA-2830 FF, SDR-2-CON-SL-ZA-2840 FF, SDR-2-CON-SL-ZA-2690 FF, SDR-2-CON-SL-ZA-2850 FF, SDR-2-CON-SL-ZA-2860 FF, SDR-2-CON-MV-ZA-1100 FF, SDR-2-CON-MV-ZA-1190 FF, SDR-2-CON-MV-ZA-1180 FF, SDR-2-CON-MV-ZA-1230 FF, SDR-2-CON-MV-ZA-1220 FF, SDR-2-CON-MV-ZA-1270 FF, SDR-2-CON-MV-ZA-1260 FF, SDR-2-CON-TE-ZA-1040 FF, SDR-2-CON-TE-ZA-1050 FF, SDR-2-CON-TE-ZA-1060 FF, SDR-2-CON-TE-ZA-3280 FF, SDR-2-CON-TE-ZA-3260 FF, SDR-2-CON-TE-ZA-3270 FF, SDR-2-CON-TE-ZA-3310 FF, SDR-2-CON-TE-ZA-3320 FF, SDR-2-CON-TE-ZA-3370 FF, SDR-2-CON-TE-ZA-3380 FF, SDR-2-CON-TE-ZA-3340 FF, SDR-2-CON-TE-ZA-3350 FF, SDR-2-CON-TE-ZA-3360 FF, SDR-2-CON-TE-ZA-3400 FF, SDR-2-CON-TE-ZA-3410 FF, SDR-2-CON-TE-ZA-3460 FF, SDR-2-CON-TE-ZA-3470 FF, SDR-2-CON-TE-ZA-3430 FF, SDR-2-CON-TE-ZA-3440 FF, SDR-2-CON-TE-ZA-3450 FF, SDR-2-CON-TE-ZA-3500 FF, SDR-2-CON-TE-ZA-3550 FF, SDR-2-CON-TE-ZA-3520 FF, SDR-2-CON-TE-ZA-3530 FF, SDR-2-CON-TE-ZA-3540 FF, SDR-2-CON-TE-ZA-3590 FF, SDR-2-CON-TE-ZA-3640 FF, SDR-2-CON-TE-ZA-3610 FF, SDR-2-CON-TE-ZA-3620 FF, SDR-2-CON-TE-ZA-3630 FF, SDR-2-CON-TE-ZA-3680 FF, SDR-2-CON-TE-ZA-3730 FF, SDR-2-CON-TE-ZA-3690 FF, SDR-2-CON-TE-ZA-3740 FF, SDR-2-CON-TE-ZA-3700 FF, SDR-2-CON-TE-ZA-3710 FF, SDR-2-CON-TE-ZA-3720 FF, SDR-2-CON-TE-ZA-3770 FF, SDR-2-CON-TE-ZA-3820 FF, SDR-2-CON-TE-ZA-3780 FF, SDR-2-CON-TE-ZA-3830 FF, SDR-2-CON-TE-ZA-3790 FF, SDR-2-CON-TE-ZA-3800 FF, SDR-2-CON-TE-ZA-3810 FF, SDR-2-CON-TE-ZA-3860 FF, SDR-2-CON-TE-ZA-3910 FF, SDR-2-CON-TE-ZA-3870 FF, SDR-2-CON-TE-ZA-3920 FF, SDR-2-CON-TE-ZA-3880 FF, SDR-2-CON-TE-ZA-3890 FF, SDR-2-CON-TE-ZA-3900 FF, SDR-2-CON-TE-ZA-3940 FF, SDR-2-CON-TE-ZA-3950 FF, SDR-2-CON-TE-ZA-4000 FF, SDR-2-CON-TE-ZA-3960 FF, SDR-2-CON-TE-ZA-4010 FF, SDR-2-CON-TE-ZA-3970 FF, SDR-2-CON-TE-ZA-3980 FF, SDR-2-CON-TE-ZA-3990 FF, SDR-2-CON-TE-ZA-4030 FF, SDR-2-CON-TE-ZA-4040 FF, SDR-2-CON-TE-ZA-4090 FF, SDR-2-CON-TE-ZA-4050 FF, SDR-2-CON-TE-ZA-4100 FF, SDR-2-CON-TE-ZA-4060 FF, SDR-2-CON-TE-ZA-4070 FF, SDR-2-CON-TE-ZA-4080 FF, SDR-2-CON-TE-ZA-4130 FF, SDR-2-CON-TE-ZA-4180 FF, SDR-2-CON-TE-ZA-4160 FF, SDR-2-CON-TE-ZA-4170 FF, SDR-2-CON-SL-ZA-3260 FF, SDR-2-CON-SL-ZA-3250 FF, SDR-2-CON-SL-ZA-3300 FF, SDR-2-CON-SL-ZA-3290 FF, SDR-2-CON-SL-ZA-3340 FF, SDR-2-CON-SL-ZA-3330 FF, SDR-2-CON-SL-ZA-3380 FF, SDR-2-CON-SL-ZA-3370 FF, SDR-2-CON-SL-ZA-3430 FF, SDR-2-CON-SL-ZA-3440 FF, SDR-2-CON-SL-ZA-3450 FF, SDR-2-CON-SL-ZA-3460 FF, SDR-2-CON-SL-ZA-3470 FF, SDR-2-CON-SL-ZA-3480 FF, SDR-2-CON-SL-ZA-3490 FF, SDR-2-CON-SL-ZA-3500 FF, SDR-2-CON-SL-ZA-3510 FF, SDR-2-CON-SL-ZA-3520 FF, SDR-2-CON-SL-ZA-3530 FF, SDR-2-CON-SL-ZA-3540 FF, SDR-2-CON-SL-ZA-3550 FF, SDR-2-CON-SL-ZA-3560 FF, SDR-2-CON-SL-ZA-3570 FF, SDR-2-CON-SL-ZA-3580 FF, SDR-2-CON-MV-ZA-1300 FF, SDR-2-CON-MV-ZA-1340 FF, SDR-2-CON-TE-ZA-4220 FF, SDR-2-CON-TE-ZA-4270 FF, SDR-2-CON-TE-ZA-4260 FF, SDR-2-CON-TE-ZA-4340 FF, SDR-2-CON-TE-ZA-4350 FF, SDR-2-CON-TE-ZA-4430 FF, SDR-2-CON-TE-ZA-4440 FF, SDR-2-CON-TE-ZA-4520 FF, SDR-2-CON-TE-ZA-4530 FF, SDR-2-CON-CC-ZA-1050 FF, SDR-2-CON-CC-ZA-1060 FF, SDR-2-CON-CC-ZA-1100 FF, SDR-2-CON-CC-ZA-1110 FF, SDR-2-CON-CC-ZA-1260 FF, SDR-2-CON-CC-ZA-1270 FF, SDR-2-CON-CC-ZA-1400 FF, SDR-2-CON-CC-ZA-1410 FF, SDR-2-CON-CC-ZA-1500 FF, SDR-2-CON-CC-ZA-1510 FF, SDR-2-CON-CC-ZA-1520 FF, SDR-2-CON-CC-ZA-1530 FF, SDR-2-CON-CC-ZA-1540 FF, SDR-2-CON-CC-ZA-1550 FF, SDR-2-CON-CC-ZA-1560 FF, SDR-2-CON-CC-ZA-1570 FF, SDR-2-CON-CC-ZA-1580 FF, SDR-2-CON-CC-ZA-1590 FF, SDR-2-CON-CC-ZA-1610 FF, SDR-2-CON-CC-ZA-1620 FF, SDR-2-CON-CC-ZA-1630 FF, SDR-2-CON-CC-ZA-1640 FF, SDR-2-CON-CC-ZA-1650 FF, SDR-2-CON-CC-ZA-1660 FF, SDR-2-CON-CC-ZA-1720 FF, SDR-2-CON-CC-ZA-1730 FF, SDR-2-CON-CC-ZA-1760 FF, SDR-2-CON-CC-ZA-1770 FF, SDR-2-CON-CC-ZA-1780 FF, SDR-2-CON-CC-ZA-1800 FF, SDR-2-CON-CC-ZA-1810 FF, SDR-2-CON-CC-ZA-1820 FF, SDR-2-CON-CC-ZA-1840 FF, SDR-2-CON-CC-ZA-1850 FF, SDR-2-CON-CC-ZA-1860 FF, SDR-2-CON-CC-ZG-1500 FF, SDR-2-CON-CC-ZG-1540 FF, SDR-2-CON-CC-ZG-1550 FF, SDR-2-CON-CC-ZG-1510 FF, SDR-2-CON-CC-ZG-1560 FF, SDR-2-CON-CC-ZG-1570 FF, SDR-2-CON-CC-ZG-1580 FF, SDR-2-CON-CC-ZG-1520 FF, SDR-2-CON-CC-ZG-1590 FF, SDR-2-CON-CC-ZG-1530 FF, SDR-2-CON-CC-ZG-1600 FF, SDR-2-CON-CC-ZG-1610 FF, SDR-2-CON-CC-ZG-1620 FF, SDR-2-CON-CC-ZG-1630 FF, SDR-2-CON-CC-ZG-1640 FF, SDR-2-CON-CC-ZG-1650 FF, SDR-2-CON-CC-ZG-1660 FF, SDR-2-CON-SE-ZA-2690 FF, SDR-2-MILS-1050 FF, SDR-2-CON-ST-ZA-5970 FF, SDR-2-CON-ST-ZA-5220 FF, SDR-2-CON-SE-ZA-1000, SDR-2-CON-SE-ZA-1420, SDR-2-CON-SE-ZA-1030, SDR-2-CON-SE-ZA-1450, SDR-2-CON-SE-ZA-1460, SDR-2-CON-SE-ZA-1520 | 15% | 0d |
|  | 8 | **install** |  | 2027-05-22 | 2027-06-05 |  |  |  |
| SDR-2-CON-IR-ZA-1010 |  | Installation of HDPE Pipe | 13d | 2027-05-22 | 2027-06-05 | SDR-2-TC-PW-1050 SS, SDR-2-TC-TSE-1040 SS, SDR-2-CON-PW-ZA-3500, SDR-2-CON-PW-ZA-3600, SDR-2-CON-PW-ZA-2850, SDR-2-CON-PW-ZA-2450, SDR-2-CON-PW-ZA-2550, SDR-2-CON-PW-ZG-1510, SDR-2-CON-PW-ZA-2950, SDR-2-CON-PW-ZA-3050, SDR-2-CON-PW-ZA-3150, SDR-2-CON-IR-ZA-1000 |  | 12d |
|  | 9 | **Finishing** |  | 2027-06-06 | 2027-06-16 |  |  |  |
| SDR-2-CON-IR-ZA-1020 |  | Finishing Works for irrigation | 10d | 2027-06-06 | 2027-06-16 | SDR-2-CON-IR-ZA-1010 |  | 12d |
|  | 10 | **Repairs** |  | 2027-06-17 | 2027-06-21 |  |  |  |
| SDR-2-CON-IR-ZA-1030 |  | Repair for irrigation Works | 4d | 2027-06-17 | 2027-06-21 | SDR-2-CON-IR-ZA-1020 |  | 12d |
|  | 2 | **IRRIGATION WORKS IN ( PH2-COL-MC20 )** |  | 2027-05-08 | 2027-06-23 |  |  |  |
|  | 7 | **Pre install** |  | 2027-05-08 | 2027-06-05 |  |  |  |
| SDR-2-CON-IR-ZA-2120 |  | Pre Install for irrigation Works | 20d | 2027-05-08 | 2027-06-05 | SDR-2-CON-IR-ZA-1000 SS, SDR-2-CON-ST-ZA-4020 |  | 9d |
|  | 8 | **install** |  | 2027-05-25 | 2027-06-07 |  |  |  |
| SDR-2-CON-IR-ZA-2130 |  | Installation of HDPE Pipe | 12d | 2027-05-25 | 2027-06-07 | SDR-2-CON-IR-ZA-2120 SS+10d |  | 9d |
|  | 9 | **Finishing** |  | 2027-06-08 | 2027-06-17 |  |  |  |
| SDR-2-CON-IR-ZA-2140 |  | Finishing Works for irrigation | 9d | 2027-06-08 | 2027-06-17 | SDR-2-CON-IR-ZA-2130 |  | 10d |
|  | 10 | **Repairs** |  | 2027-06-19 | 2027-06-23 |  |  |  |
| SDR-2-CON-IR-ZA-2150 |  | Repair for irrigation Works | 5d | 2027-06-19 | 2027-06-23 | SDR-2-CON-IR-ZA-2140 |  | 10d |
|  | 11 | **IRRIGATION WORKS IN ( PH2-A-MCA0 )** |  | 2027-05-08 | 2027-06-23 |  |  |  |
|  | 7 | **Pre install** |  | 2027-05-08 | 2027-05-26 |  |  |  |
| SDR-2-CON-IR-ZA-2160 |  | Pre Install for irrigation Works | 12d | 2027-05-08 | 2027-05-26 | SDR-2-CON-IR-ZA-1000 SS, SDR-2-CON-ST-ZA-4920 |  | 6d |
|  | 8 | **install** |  | 2027-05-27 | 2027-06-10 |  |  |  |
| SDR-2-CON-IR-ZA-2170 |  | Installation of HDPE Pipe | 13d | 2027-05-27 | 2027-06-10 | SDR-2-CON-IR-ZA-2160 |  | 6d |
|  | 9 | **Finishing** |  | 2027-06-12 | 2027-06-21 |  |  |  |
| SDR-2-CON-IR-ZA-2180 |  | Finishing Works for irrigation | 9d | 2027-06-12 | 2027-06-21 | SDR-2-CON-IR-ZA-2170 |  | 6d |
|  | 10 | **Repairs** |  | 2027-06-22 | 2027-06-23 |  |  |  |
| SDR-2-CON-IR-ZA-2190 |  | Repair for irrigation Works | 2d | 2027-06-22 | 2027-06-23 | SDR-2-CON-IR-ZA-2180 |  | 6d |
|  | 12 | **IRRIGATION WORKS IN ( PH2-A-MCB0 )** |  | 2027-05-08 | 2027-06-28 |  |  |  |
|  | 7 | **Pre install** |  | 2027-05-08 | 2027-05-29 |  |  |  |
| SDR-2-CON-IR-ZA-2200 |  | Pre Install for irrigation Works | 14d | 2027-05-08 | 2027-05-29 | SDR-2-CON-IR-ZA-1000 SS, SDR-2-CON-ST-ZA-4020 |  | 6d |
|  | 8 | **install** |  | 2027-05-30 | 2027-06-12 |  |  |  |
| SDR-2-CON-IR-ZA-2210 |  | Installation of HDPE Pipe | 12d | 2027-05-30 | 2027-06-12 | SDR-2-CON-IR-ZA-2200, SDR-2-CON-ST-ZA-5970 |  | 6d |

| ID | WBS | Task | Duration | Start | Finish | Predecessors | Complete | Total float |
| --- | --- | --- | --- | --- | --- | --- | --- | --- |
|  | 9 | **Finishing** |  | 2027-06-13 | 2027-06-21 |  |  |  |
| SDR-2-CON-IR-ZA-2220 |  | Finishing Works for irrigation | 8d | 2027-06-13 | 2027-06-21 | SDR-2-CON-IR-ZA-2210 |  | 6d |
|  | 10 | **Repairs** |  | 2027-06-22 | 2027-06-28 |  |  |  |
| SDR-2-CON-IR-ZA-2230 |  | Repair for irrigation Works | 6d | 2027-06-22 | 2027-06-28 | SDR-2-CON-IR-ZA-2220 |  | 6d |
|  | 3 | **IRRIGATION WORKS IN ( PH2-A-MCC0 )** |  | 2026-09-28 | 2027-06-27 |  |  |  |
|  | 7 | **Pre install** |  | 2026-09-28 | 2027-05-29 |  |  |  |
| SDR-2-CON-IR-ZA-2240 |  | Pre Install for irrigation Works | 14d | 2026-09-28 A | 2027-05-29 | SDR-2-CON-IR-ZA-1000 SS, SDR-2-CON-ST-ZA-4470 | 25% | 6d |
|  | 8 | **install** |  | 2027-05-30 | 2027-06-13 |  |  |  |
| SDR-2-CON-IR-ZA-2250 |  | Installation of HDPE Pipe | 13d | 2027-05-30 | 2027-06-13 | SDR-2-CON-IR-ZA-2240 |  | 6d |
|  | 9 | **Finishing** |  | 2027-06-14 | 2027-06-24 |  |  |  |
| SDR-2-CON-IR-ZA-2260 |  | Finishing Works for irrigation | 10d | 2027-06-14 | 2027-06-24 | SDR-2-CON-IR-ZA-2250 |  | 6d |
|  | 10 | **Repairs** |  | 2027-06-26 | 2027-06-27 |  |  |  |
| SDR-2-CON-IR-ZA-2270 |  | Repair for irrigation Works | 2d | 2027-06-26 | 2027-06-27 | SDR-2-CON-IR-ZA-2260 |  | 6d |
|  | 4 | **IRRIGATION WORKS IN ( PH2-A-MCD0 )** |  | 2026-09-24 | 2027-06-14 |  |  |  |
|  | 7 | **Pre install** |  | 2026-09-24 | 2027-06-05 |  |  |  |
| SDR-2-CON-IR-ZA-2280 |  | Pre Install for irrigation Works | 20d | 2026-09-24 A | 2027-06-05 | SDR-2-CON-IR-ZA-1000 SS | 25% | 18d |
|  | 8 | **install** |  | 2026-09-26 | 2027-06-05 |  |  |  |
| SDR-2-CON-IR-ZA-2290 |  | Installation of HDPE Pipe | 13d | 2026-09-26 A | 2027-06-05 | SDR-2-CON-IR-ZA-2280 FF | 25% | 18d |
|  | 9 | **Finishing** |  | 2027-06-06 | 2027-06-09 |  |  |  |
| SDR-2-CON-IR-ZA-2300 |  | Finishing Works for irrigation | 4d | 2027-06-06 | 2027-06-09 | SDR-2-CON-IR-ZA-2290 |  | 18d |
|  | 10 | **Repairs** |  | 2027-06-10 | 2027-06-14 |  |  |  |
| SDR-2-CON-IR-ZA-2310 |  | Repair for irrigation Works | 4d | 2027-06-10 | 2027-06-14 | SDR-2-CON-IR-ZA-2300 |  | 18d |
|  | 5 | **IRRIGATION WORKS IN ( PH2-A-MCE0 )** |  | 2026-09-28 | 2027-06-28 |  |  |  |
|  | 7 | **Pre install** |  | 2026-09-28 | 2027-05-29 |  |  |  |
| SDR-2-CON-IR-ZA-2320 |  | Pre Install for irrigation Works | 14d | 2026-09-28 A | 2027-05-29 | SDR-2-CON-IR-ZA-1000 SS, SDR-2-CON-ST-ZA-4320 | 25% | 6d |
|  | 8 | **install** |  | 2026-10-01 | 2027-06-13 |  |  |  |
| SDR-2-CON-IR-ZA-2330 |  | Installation of HDPE Pipe | 13d | 2026-10-01 A | 2027-06-13 | SDR-2-CON-IR-ZA-2320 | 25% | 6d |
|  | 9 | **Finishing** |  | 2027-06-14 | 2027-06-24 |  |  |  |
| SDR-2-CON-IR-ZA-2340 |  | Finishing Works for irrigation | 10d | 2027-06-14 | 2027-06-24 | SDR-2-CON-IR-ZA-2330 |  | 6d |
|  | 10 | **Repairs** |  | 2027-06-26 | 2027-06-28 |  |  |  |
| SDR-2-CON-IR-ZA-2350 |  | Repair for irrigation Works | 3d | 2027-06-26 | 2027-06-28 | SDR-2-CON-IR-ZA-2340 |  | 6d |
|  | 6 | **IRRIGATION WORKS IN ( PH2-A-MCF0 )** |  | 2027-05-08 | 2027-06-28 |  |  |  |
|  | 7 | **Pre install** |  | 2027-05-08 | 2027-05-29 |  |  |  |
| SDR-2-CON-IR-ZA-2360 |  | Pre Install for irrigation Works | 14d | 2027-05-08 | 2027-05-29 | SDR-2-CON-IR-ZA-1000 SS, SDR-2-CON-ST-ZA-4470 |  | 6d |
|  | 8 | **install** |  | 2027-05-30 | 2027-06-13 |  |  |  |
| SDR-2-CON-IR-ZA-2370 |  | Installation of HDPE Pipe | 13d | 2027-05-30 | 2027-06-13 | SDR-2-CON-IR-ZA-2360 |  | 6d |
|  | 9 | **Finishing** |  | 2027-06-14 | 2027-06-24 |  |  |  |
| SDR-2-CON-IR-ZA-2380 |  | Finishing Works for irrigation | 10d | 2027-06-14 | 2027-06-24 | SDR-2-CON-IR-ZA-2370 |  | 6d |
|  | 10 | **Repairs** |  | 2027-06-26 | 2027-06-28 |  |  |  |
| SDR-2-CON-IR-ZA-2390 |  | Repair for irrigation Works | 3d | 2027-06-26 | 2027-06-28 | SDR-2-CON-IR-ZA-2380 |  | 6d |
|  | 7 | **IRRIGATION WORKS IN ( PH2-A-MCG0 )** |  | 2027-05-08 | 2027-06-28 |  |  |  |
|  | 7 | **Pre install** |  | 2027-05-08 | 2027-05-29 |  |  |  |
| SDR-2-CON-IR-ZA-2400 |  | Pre Install for irrigation Works | 14d | 2027-05-08 | 2027-05-29 | SDR-2-CON-IR-ZA-1000 SS, SDR-2-CON-ST-ZA-4620 |  | 6d |
|  | 8 | **install** |  | 2027-05-30 | 2027-06-13 |  |  |  |
| SDR-2-CON-IR-ZA-2410 |  | Installation of HDPE Pipe | 13d | 2027-05-30 | 2027-06-13 | SDR-2-CON-IR-ZA-2400 |  | 6d |
|  | 9 | **Finishing** |  | 2027-06-14 | 2027-06-26 |  |  |  |
| SDR-2-CON-IR-ZA-2420 |  | Finishing Works for irrigation | 11d | 2027-06-14 | 2027-06-26 | SDR-2-CON-IR-ZA-2410 |  | 6d |
|  | 10 | **Repairs** |  | 2027-06-27 | 2027-06-28 |  |  |  |
| SDR-2-CON-IR-ZA-2430 |  | Repair for irrigation Works | 2d | 2027-06-27 | 2027-06-28 | SDR-2-CON-IR-ZA-2420, SDR-2-CON-IR-ZA-2350 FF, SDR-2-CON-IR-ZA-2390 FF |  | 6d |
|  | 8 | **IRRIGATION WORKS IN ( PH2-A-MCH0 )** |  | 2027-05-08 | 2027-06-28 |  |  |  |
|  | 7 | **Pre install** |  | 2027-05-08 | 2027-05-29 |  |  |  |
| SDR-2-CON-IR-ZA-2440 |  | Pre Install for irrigation Works | 14d | 2027-05-08 | 2027-05-29 | SDR-2-CON-IR-ZA-1000 SS, SDR-2-CON-ST-ZA-4770 |  | 6d |
|  | 8 | **install** |  | 2027-05-30 | 2027-06-13 |  |  |  |
| SDR-2-CON-IR-ZA-2450 |  | Installation of HDPE Pipe | 13d | 2027-05-30 | 2027-06-13 | SDR-2-CON-IR-ZA-2440 |  | 6d |
|  | 9 | **Finishing** |  | 2027-06-14 | 2027-06-26 |  |  |  |
| SDR-2-CON-IR-ZA-2460 |  | Finishing Works for irrigation | 11d | 2027-06-14 | 2027-06-26 | SDR-2-CON-IR-ZA-2450 |  | 6d |
|  | 10 | **Repairs** |  | 2027-06-27 | 2027-06-28 |  |  |  |
| SDR-2-CON-IR-ZA-2470 |  | Repair for irrigation Works | 2d | 2027-06-27 | 2027-06-28 | SDR-2-CON-IR-ZA-2460, SDR-2-CON-IR-ZA-2430 FF |  | 6d |
|  | 9 | **IRRIGATION WORKS IN ( PH2-ART-MC00 )** |  | 2026-09-28 | 2027-06-28 |  |  |  |
|  | 7 | **Pre install** |  | 2026-09-28 | 2027-06-05 |  |  |  |
| SDR-2-CON-IR-ZA-2480 |  | Pre Install for irrigation Works | 20d | 2026-09-28 A | 2027-06-05 | SDR-2-CON-IR-ZA-1000 SS, SDR-2-CON-ST-ZA-4920 | 25% | 16d |
|  | 8 | **install** |  | 2026-10-01 | 2027-06-01 |  |  |  |
| SDR-2-CON-IR-ZA-2490 |  | Installation of HDPE Pipe | 13d | 2026-10-01 A | 2027-06-01 | SDR-2-CON-IR-ZA-2480 SS+10d | 25% | 16d |
|  | 9 | **Finishing** |  | 2027-06-02 | 2027-06-14 |  |  |  |
| SDR-2-CON-IR-ZA-2500 |  | Finishing Works for irrigation | 11d | 2027-06-02 | 2027-06-14 | SDR-2-CON-IR-ZA-2490 |  | 16d |
|  | 10 | **Repairs** |  | 2027-06-27 | 2027-06-28 |  |  |  |
| SDR-2-CON-IR-ZA-2510 |  | Repair for irrigation Works | 2d | 2027-06-27 | 2027-06-28 | SDR-2-CON-IR-ZA-2500, SDR-2-CON-IR-ZA-2470 FF |  | 6d |
|  | 10 | **IRRIGATION WORKS IN ( PH2-ART-MC10 )** |  | 2026-08-31 | 2027-06-28 |  |  |  |
|  | 7 | **Pre install** |  | 2026-08-31 | 2027-05-08 |  |  |  |
| SDR-2-CON-IR-ZA-2520 |  | Pre Install for irrigation Works | 20d | 2026-08-31 A | 2027-05-08 | SDR-2-CON-IR-ZA-1000 FF, SDR-2-CON-ST-ZA-4920 FF | 25% | 1.7d |

| ID | WBS | Task | Duration | Start | Finish | Predecessors | Complete | Total float |
| --- | --- | --- | --- | --- | --- | --- | --- | --- |
|  | 8 | **install** |  | 2026-10-03 | 2027-05-29 |  |  |  |
| SDR-2-CON-IR-ZA-2530 |  | Installation of HDPE Pipe | 13d | 2026-10-03 A | 2027-05-29 | SDR-2-CON-IR-ZA-2520 | 10% | 19d |
|  | 9 | **Finishing** |  | 2027-05-30 | 2027-06-10 |  |  |  |
| SDR-2-CON-IR-ZA-2540 |  | Finishing Works for irrigation | 11d | 2027-05-30 | 2027-06-10 | SDR-2-CON-IR-ZA-2530 |  | 19d |
|  | 10 | **Repairs** |  | 2027-06-27 | 2027-06-28 |  |  |  |
| SDR-2-CON-IR-ZA-2550 |  | Repair for irrigation Works | 2d | 2027-06-27 | 2027-06-28 | SDR-2-CON-IR-ZA-2540, SDR-2-CON-IR-ZA-2510 SS |  | 6d |
|  | 13 | **Irrigation Controllers** |  | 2027-05-05 | 2027-06-27 |  |  |  |
|  | 1 | **Pre install** |  | 2027-05-05 | 2027-06-05 |  |  |  |
| SDR-2-CON-IR-ZA-2070 |  | Pre Install of Irrigation controllers | 21d | 2027-05-05 | 2027-06-05 | SDR-2-CON-IR-ZA-2520 SS |  | 12.7d |
|  | 2 | **install** |  | 2027-05-23 | 2027-06-09 |  |  |  |
| SDR-2-CON-IR-ZA-2760 |  | Install Irrigation controllers | 15d | 2027-05-23 | 2027-06-09 | SDR-2-CON-IR-ZA-2070 SS+10d |  | 12.7d |
|  | 3 | **Finishing** |  | 2027-06-09 | 2027-06-19 |  |  |  |
| SDR-2-CON-IR-ZA-2770 |  | Finishing of Irrigation controllers | 8d | 2027-06-09 | 2027-06-19 | SDR-2-CON-IR-ZA-2760 |  | 12.7d |
|  | 4 | **Repairs** |  | 2027-06-27 | 2027-06-27 |  |  |  |
| SDR-2-CON-IR-ZA-2780 |  | Repairs of Irrigation controllers | 1d | 2027-06-27 | 2027-06-27 | SDR-2-CON-IR-ZA-2770, SDR-2-CON-IR-ZA-2550 SS |  | 6d |
|  | 14 | **Decoder Cable & Conduit Works** |  | 2027-05-05 | 2027-06-29 |  |  |  |
|  | 1 | **Pre install** |  | 2027-05-05 | 2027-06-05 |  |  |  |
| SDR-2-CON-IR-ZA-2080 |  | Pre Install of Decoder Cable & Conduits Works | 21d | 2027-05-05 | 2027-06-05 | SDR-2-CON-IR-ZA-2520 SS |  | 4.7d |
|  | 2 | **install** |  | 2027-06-05 | 2027-06-22 |  |  |  |
| SDR-2-CON-IR-ZA-2090 |  | Install of Decoder Cable & Conduits Works | 15d | 2027-06-05 | 2027-06-22 | SDR-2-CON-IR-ZA-2080, SDR-2-CON-IR-ZA-2080 FF |  | 4.7d |
|  | 3 | **Finishing** |  | 2027-06-22 | 2027-06-28 |  |  |  |
| SDR-2-CON-IR-ZA-2790 |  | Finishing of Decoder Cable & Conduits Works | 5d | 2027-06-22 | 2027-06-28 | SDR-2-CON-IR-ZA-2090 |  | 4.7d |
|  | 4 | **Repairs** |  | 2027-06-28 | 2027-06-29 |  |  |  |
| SDR-2-CON-IR-ZA-2800 |  | Repair of Decoder Cable & Conduits Works | 1d | 2027-06-28 | 2027-06-29 | SDR-2-CON-IR-ZA-2790, SDR-2-CON-IR-ZA-2270 FF, SDR-2-CON-IR-ZA-2780 FF |  | 4.7d |
|  | 15 | **Solar Power System Installation** |  | 2027-05-05 | 2027-06-30 |  |  |  |
|  | 1 | **Pre install** |  | 2027-05-05 | 2027-06-05 |  |  |  |
| SDR-2-CON-IR-ZA-2100 |  | Pre Install of Solar Power System Installation | 21d | 2027-05-05 | 2027-06-05 | SDR-2-CON-IR-ZA-2520 SS |  | 4.7d |
|  | 2 | **install** |  | 2027-06-05 | 2027-06-22 |  |  |  |
| SDR-2-CON-IR-ZA-2810 |  | Install of Pre Install of Solar Power System Installation | 15d | 2027-06-05 | 2027-06-22 | SDR-2-CON-IR-ZA-2100 |  | 4.7d |
|  | 3 | **Finishing** |  | 2027-06-22 | 2027-06-29 |  |  |  |
| SDR-2-CON-IR-ZA-2820 |  | Finishing of Pre Install of Solar Power System Installation | 6d | 2027-06-22 | 2027-06-29 | SDR-2-CON-IR-ZA-2810 |  | 4.7d |
|  | 4 | **Repairs** |  | 2027-06-29 | 2027-06-30 |  |  |  |
| SDR-2-CON-IR-ZA-2830 |  | Repair of Solar Power System Installation | 1d | 2027-06-29 | 2027-06-30 | SDR-2-CON-IR-ZA-2820, SDR-2-CON-IR-ZA-2800 |  | 4.7d |
|  | 16 | **System Integration & Programming** |  | 2027-05-05 | 2027-06-30 |  |  |  |
|  | 1 | **Pre install** |  | 2027-05-05 | 2027-06-05 |  |  |  |
| SDR-2-CON-IR-ZA-2110 |  | Pre Install of System Integration & Programming | 21d | 2027-05-05 | 2027-06-05 | SDR-2-CON-IR-ZA-2520 SS |  | 12.7d |
|  | 2 | **install** |  | 2027-05-23 | 2027-06-09 |  |  |  |
| SDR-2-CON-IR-ZA-2840 |  | Install of System Integration & Programming | 15d | 2027-05-23 | 2027-06-09 | SDR-2-CON-IR-ZA-2110 SS+10d |  | 12.7d |
|  | 3 | **Finishing** |  | 2027-06-09 | 2027-06-19 |  |  |  |
| SDR-2-CON-IR-ZA-2850 |  | Finishing of System Integration & Programming | 8d | 2027-06-09 | 2027-06-19 | SDR-2-CON-IR-ZA-2840 |  | 12.7d |
|  | 4 | **Repairs** |  | 2027-06-29 | 2027-06-30 |  |  |  |
| SDR-2-CON-IR-ZA-2860 |  | Repair of System Integration & Programming | 1d | 2027-06-29 | 2027-06-30 | SDR-2-CON-IR-ZA-2850 FS+1d, SDR-2-CON-IR-ZA-2830 FF |  | 4.7d |
|  | 1 | **Landscape Works** |  | 2027-05-05 | 2027-06-30 |  |  |  |
|  | 1 | **GROUND COVER** |  | 2027-05-05 | 2027-06-05 |  |  |  |
| SDR-2-CON-LS-ZA-1000 |  | Clearing & grubbing of landscape areas | 15d | 2027-05-05 | 2027-05-29 | SDR-2-CON-ST-ZA-6120, SDR-2-CLO-AS-C-1010, SDR-2-CON-IR-ZA-2520 SS |  | 1.7d |
| SDR-2-CON-LS-ZA-1010 |  | Grass laying | 14d | 2027-05-13 | 2027-06-05 | SDR-2-CON-LS-ZA-1000 SS+7d |  | 9.7d |
|  | 2 | **Trees** |  | 2027-06-05 | 2027-06-24 |  |  |  |
| SDR-2-CON-LS-ZA-1020 |  | Albizia lebbeck tress planting. | 14d | 2027-06-05 | 2027-06-21 | SDR-2-CON-LS-ZA-1010 |  | 9.7d |
| SDR-2-CON-LS-ZA-1030 |  | Tabopia tress planting. | 14d | 2027-06-05 | 2027-06-21 | SDR-2-CON-LS-ZA-1020 SS |  | 9.7d |
| SDR-2-CON-LS-ZA-1040 |  | Plumeria alba tress planting. | 14d | 2027-06-08 | 2027-06-24 | SDR-2-CON-LS-ZA-1030 SS+3d |  | 9.7d |
| SDR-2-CON-LS-ZA-1050 |  | Cassia glauca tress planting. | 14d | 2027-06-08 | 2027-06-24 | SDR-2-CON-LS-ZA-1040 SS |  | 9.7d |
|  | 3 | **Miscellaneous landscaping items** |  | 2027-06-15 | 2027-06-30 |  |  |  |
| SDR-2-CON-LS-ZA-1060 |  | Gravel/Stone mulch: 75mm thick Hard, durable stone, washed free of loam, sand, clay, | 13d | 2027-06-15 | 2027-06-30 | SDR-2-CON-LS-ZA-1050 SS, SDR-2-CON-IR-ZA-2230 FF, SDR-2-CON-IR-ZA-2860 FF |  | 4.7d |
|  | ZG | **ZONE G** |  | 2027-05-05 | 2027-07-05 |  |  |  |
|  | 2 | **Irrigation Works** |  | 2027-05-05 | 2027-07-05 |  |  |  |
|  | 11 | **IRRIGATION WORKS IN ( PH2-G-MCE0 )** |  | 2027-05-08 | 2027-07-05 |  |  |  |
|  | 7 | **Pre install** |  | 2027-05-08 | 2027-06-05 |  |  |  |
| SDR-2-CON-IR-ZA-2560 |  | Pre Install for irrigation Works | 20d | 2027-05-08 | 2027-06-05 | SDR-2-CON-IR-ZA-1000 SS, SDR-2-CON-ST-ZA-5520 FF |  | 0d |
|  | 8 | **install** |  | 2027-06-06 | 2027-06-20 |  |  |  |
| SDR-2-CON-IR-ZA-2570 |  | Installation of HDPE Pipe | 13d | 2027-06-06 | 2027-06-20 | SDR-2-CON-IR-ZA-2560 |  | 0d |
|  | 9 | **Finishing** |  | 2027-06-21 | 2027-07-01 |  |  |  |
| SDR-2-CON-IR-ZA-2580 |  | Finishing Works for irrigation | 10d | 2027-06-21 | 2027-07-01 | SDR-2-CON-IR-ZA-2570 |  | 0d |
|  | 10 | **Repairs** |  | 2027-07-03 | 2027-07-05 |  |  |  |
| SDR-2-CON-IR-ZA-2590 |  | Repair for irrigation Works | 3d | 2027-07-03 | 2027-07-05 | SDR-2-CON-IR-ZA-2580 |  | 0d |
|  | 5 | **IRRIGATION WORKS IN ( PH2-G-MCZ0 )** |  | 2027-05-08 | 2027-07-05 |  |  |  |
|  | 7 | **Pre install** |  | 2027-05-08 | 2027-06-05 |  |  |  |
| SDR-2-CON-IR-ZA-2600 |  | Pre Install for irrigation Works | 20d | 2027-05-08 | 2027-06-05 | SDR-2-CON-IR-ZA-1000 SS, SDR-2-CON-ST-ZA-5670 FF |  | 0d |
|  | 8 | **install** |  | 2027-06-06 | 2027-06-20 |  |  |  |
| SDR-2-CON-IR-ZA-2610 |  | Installation of HDPE Pipe | 13d | 2027-06-06 | 2027-06-20 | SDR-2-CON-IR-ZA-2600 |  | 0d |
|  | 9 | **Finishing** |  | 2027-06-21 | 2027-07-01 |  |  |  |

| ID | WBS | Task | Duration | Start | Finish | Predecessors | Total float |
| --- | --- | --- | --- | --- | --- | --- | --- |
| SDR-2-CON-IR-ZA-2620 |  | Finishing Works for irrigation | 10d | 2027-06-21 | 2027-07-01 | SDR-2-CON-IR-ZA-2610 | 0d |
|  | 10 | **Repairs** |  | 2027-07-03 | 2027-07-05 |  |  |
| SDR-2-CON-IR-ZA-2630 |  | Repair for irrigation Works | 3d | 2027-07-03 | 2027-07-05 | SDR-2-CON-IR-ZA-2620, SDR-2-CON-IR-ZA-2590 FF | 0d |
|  | 1 | **IRRIGATION WORKS IN ( PH2-G-MCA0 )** |  | 2027-05-08 | 2027-07-05 |  |  |
|  | 7 | **Pre install** |  | 2027-05-08 | 2027-06-03 |  |  |
| SDR-2-CON-IR-ZA-2640 |  | Pre Install for irrigation Works | 19d | 2027-05-08 | 2027-06-03 | SDR-2-CON-IR-ZA-2600 SS, SDR-2-CON-ST-ZA-6120 FS+0.8d | 0d |
|  | 8 | **install** |  | 2027-06-05 | 2027-06-19 |  |  |
| SDR-2-CON-IR-ZA-2650 |  | Installation of HDPE Pipe | 13d | 2027-06-05 | 2027-06-19 | SDR-2-CON-IR-ZA-2640 | 0d |
|  | 9 | **Finishing** |  | 2027-06-20 | 2027-07-03 |  |  |
| SDR-2-CON-IR-ZA-2660 |  | Finishing Works for irrigation | 12d | 2027-06-20 | 2027-07-03 | SDR-2-CON-IR-ZA-2650 | 0d |
|  | 10 | **Repairs** |  | 2027-07-04 | 2027-07-05 |  |  |
| SDR-2-CON-IR-ZA-2670 |  | Repair for irrigation Works | 2d | 2027-07-04 | 2027-07-05 | SDR-2-CON-IR-ZA-2660, SDR-2-CON-IR-ZA-2630 FF | 0d |
|  | 2 | **IRRIGATION WORKS IN ( PH2-G-MCF0 )** |  | 2027-05-08 | 2027-07-05 |  |  |
|  | 7 | **Pre install** |  | 2027-05-08 | 2027-06-05 |  |  |
| SDR-2-CON-IR-ZA-2680 |  | Pre Install for irrigation Works | 20d | 2027-05-08 | 2027-06-05 | SDR-2-CON-IR-ZA-1000 SS, SDR-2-CON-ST-ZA-5670 FF | 0d |
|  | 8 | **install** |  | 2027-06-06 | 2027-06-20 |  |  |
| SDR-2-CON-IR-ZA-2690 |  | Installation of HDPE Pipe | 13d | 2027-06-06 | 2027-06-20 | SDR-2-CON-IR-ZA-2680 | 0d |
|  | 9 | **Finishing** |  | 2027-06-21 | 2027-07-03 |  |  |
| SDR-2-CON-IR-ZA-2700 |  | Finishing Works for irrigation | 11d | 2027-06-21 | 2027-07-03 | SDR-2-CON-IR-ZA-2690 | 0d |
|  | 10 | **Repairs** |  | 2027-07-04 | 2027-07-05 |  |  |
| SDR-2-CON-IR-ZA-2710 |  | Repair for irrigation Works | 2d | 2027-07-04 | 2027-07-05 | SDR-2-CON-IR-ZA-2700, SDR-2-CON-IR-ZA-2670 FF | 0d |
|  | 3 | **IRRIGATION WORKS IN ( PH2-G-MCG0 )** |  | 2027-05-08 | 2027-07-05 |  |  |
|  | 7 | **Pre install** |  | 2027-05-08 | 2027-06-03 |  |  |
| SDR-2-CON-IR-ZA-2720 |  | Pre Install for irrigation Works | 19d | 2027-05-08 | 2027-06-03 | SDR-2-CON-IR-ZA-2600 SS, SDR-2-CON-ST-ZA-6120 FS+0.8d | 0d |
|  | 8 | **install** |  | 2027-06-05 | 2027-06-19 |  |  |
| SDR-2-CON-IR-ZA-2730 |  | Installation of HDPE Pipe | 13d | 2027-06-05 | 2027-06-19 | SDR-2-CON-IR-ZA-2720, SDR-2-TC-CW-1010 | 0d |
|  | 9 | **Finishing** |  | 2027-06-20 | 2027-07-03 |  |  |
| SDR-2-CON-IR-ZA-2740 |  | Finishing Works for irrigation | 12d | 2027-06-20 | 2027-07-03 | SDR-2-CON-IR-ZA-2730 | 0d |
|  | 10 | **Repairs** |  | 2027-07-04 | 2027-07-05 |  |  |
| SDR-2-CON-IR-ZA-2750 |  | Repair for irrigation Works | 2d | 2027-07-04 | 2027-07-05 | SDR-2-CON-IR-ZA-2740, SDR-2-CON-IR-ZA-2710 FF | 0d |
|  | 13 | **Irrigation Controllers** |  | 2027-05-05 | 2027-07-05 |  |  |
|  | 1 | **Pre install** |  | 2027-05-05 | 2027-06-05 |  |  |
| SDR-2-CON-IR-ZA-2870 |  | Pre Install of Irrigation controllers | 21d | 2027-05-05 | 2027-06-05 | SDR-2-CON-IR-ZA-2520 SS | 1.7d |
|  | 2 | **install** |  | 2027-06-05 | 2027-06-22 |  |  |
| SDR-2-CON-IR-ZA-2880 |  | Install Irrigation controllers | 15d | 2027-06-05 | 2027-06-22 | SDR-2-CON-IR-ZA-2870 | 1.7d |
|  | 3 | **Finishing** |  | 2027-06-22 | 2027-07-01 |  |  |
| SDR-2-CON-IR-ZA-2890 |  | Finishing of Irrigation controllers | 8d | 2027-06-22 | 2027-07-01 | SDR-2-CON-IR-ZA-2880 | 1.7d |
|  | 4 | **Repairs** |  | 2027-07-04 | 2027-07-05 |  |  |
| SDR-2-CON-IR-ZA-2900 |  | Repairs of Irrigation controllers | 2d | 2027-07-04 | 2027-07-05 | SDR-2-CON-IR-ZA-2890, SDR-2-CON-IR-ZA-2750 FF | 0d |
|  | 14 | **Decoder Cable & Conduit Works** |  | 2027-05-05 | 2027-07-05 |  |  |
|  | 1 | **Pre install** |  | 2027-05-05 | 2027-06-05 |  |  |
| SDR-2-CON-IR-ZA-2910 |  | Pre Install of Decoder Cable & Conduits Works | 21d | 2027-05-05 | 2027-06-05 | SDR-2-CON-IR-ZA-2520 SS | 1.7d |
|  | 2 | **install** |  | 2027-06-05 | 2027-06-22 |  |  |
| SDR-2-CON-IR-ZA-2920 |  | Install of Decoder Cable & Conduits Works | 15d | 2027-06-05 | 2027-06-22 | SDR-2-CON-IR-ZA-2910, SDR-2-CON-IR-ZA-2910 FF | 1.7d |
|  | 3 | **Finishing** |  | 2027-06-22 | 2027-07-03 |  |  |
| SDR-2-CON-IR-ZA-2930 |  | Finishing of Decoder Cable & Conduits Works | 9d | 2027-06-22 | 2027-07-03 | SDR-2-CON-IR-ZA-2920 | 1.7d |
|  | 4 | **Repairs** |  | 2027-07-05 | 2027-07-05 |  |  |
| SDR-2-CON-IR-ZA-2940 |  | Repair of Decoder Cable & Conduits Works | 1d | 2027-07-05 | 2027-07-05 | SDR-2-CON-IR-ZA-2930, SDR-2-CON-IR-ZA-2900 FF | 0d |
|  | 15 | **Solar Power System Installation** |  | 2027-05-05 | 2027-07-04 |  |  |
|  | 1 | **Pre install** |  | 2027-05-05 | 2027-06-05 |  |  |
| SDR-2-CON-IR-ZA-2950 |  | Pre Install of Solar Power System Installation | 21d | 2027-05-05 | 2027-06-05 | SDR-2-CON-IR-ZA-2520 SS | 1.7d |
|  | 2 | **install** |  | 2027-06-05 | 2027-06-22 |  |  |
| SDR-2-CON-IR-ZA-2960 |  | Install of Pre Install of Solar Power System Installation | 15d | 2027-06-05 | 2027-06-22 | SDR-2-CON-IR-ZA-2950 | 1.7d |
|  | 3 | **Finishing** |  | 2027-06-22 | 2027-06-30 |  |  |
| SDR-2-CON-IR-ZA-2970 |  | Finishing of Pre Install of Solar Power System Installation | 7d | 2027-06-22 | 2027-06-30 | SDR-2-CON-IR-ZA-2960 | 1.7d |
|  | 4 | **Repairs** |  | 2027-06-30 | 2027-07-04 |  |  |
| SDR-2-CON-IR-ZA-2980 |  | Repair of Solar Power System Installation | 3d | 2027-06-30 | 2027-07-04 | SDR-2-CON-IR-ZA-2970 | 1.7d |
|  | 1 | **Landscape Works** |  | 2027-05-05 | 2027-07-04 |  |  |
|  | 1 | **GROUND COVER** |  | 2027-05-05 | 2027-06-13 |  |  |
| SDR-2-CON-LS-ZG-1000 |  | Clearing & grubbing of landscape areas | 15d | 2027-05-05 | 2027-05-29 | SDR-2-CON-LS-ZA-1000 SS, SDR-2-CON-IR-ZA-2520 SS | 1.7d |
| SDR-2-CON-LS-ZG-1010 |  | Grass laying | 13d | 2027-05-29 | 2027-06-13 | SDR-2-CON-LS-ZG-1000, SDR-2-CON-ST-ZA-5220, SDR-2-CON-ST-ZA-5070 | 1.7d |
|  | 2 | **Trees** |  | 2027-06-13 | 2027-07-04 |  |  |
| SDR-2-CON-LS-ZG-1020 |  | Albizia lebbeck tress planting. | 18d | 2027-06-13 | 2027-07-04 | SDR-2-CON-LS-ZG-1010 | 1.7d |
| SDR-2-CON-LS-ZG-1030 |  | Tabopia tress planting. | 18d | 2027-06-13 | 2027-07-04 | SDR-2-CON-LS-ZG-1020 SS | 1.7d |
| SDR-2-CON-LS-ZG-1040 |  | Plumeria alba tress planting. | 18d | 2027-06-13 | 2027-07-04 | SDR-2-CON-LS-ZG-1030 SS | 1.7d |
| SDR-2-CON-LS-ZG-1050 |  | Cassia glauca tress planting. | 18d | 2027-06-13 | 2027-07-04 | SDR-2-CON-LS-ZG-1040 SS | 1.7d |
|  | 3 | **Miscellaneous landscaping items** |  | 2027-06-13 | 2027-07-04 |  |  |
| SDR-2-CON-LS-ZG-1060 |  | Gravel/Stone mulch: 75mm thick Hard, durable stone, washed free of loam, sand, clay, | 18d | 2027-06-13 | 2027-07-04 | SDR-2-CON-LS-ZG-1050 SS | 1.7d |
|  | CC | **CCTV Works** |  | 2026-07-25 | 2027-04-13 |  |  |
|  | ZA | **ZONE A** |  | 2026-07-25 | 2027-04-13 |  |  |

| ID | WBS | Task | Duration | Start | Finish | Predecessors | Complete | Total float |
| --- | --- | --- | --- | --- | --- | --- | --- | --- |
|  | 1 | **Poles 1st and 2nd Fix Works** |  | 2026-07-25 | 2026-12-26 |  |  |  |
|  | 1 | **Excavation** |  | 2026-07-25 | 2026-12-08 |  |  |  |
| SDR-2-CON-CC-ZA-1000 |  | Excavation 1Sst & 2nd Fix Works | 10d | 2026-07-25 A | 2026-12-08 | SDR-2-CON-ST-ZA-6190, SDR-2-CON-MV-ZA-1000 FF, SDR-2-PRO-DEL-E-1130 FF, SDR-2-PRO-DEL-M-1070 FF, SDR-2-PRO-DEL-M-1060 FF, SDR-2-PRO-DEL-E-1100 FF, SDR-2-CON-ST-ZA-6280 FF, SDR-2-PRO-ST-E-1140 FF, SDR-2-PRO-ST-E-1170 FF | 50% | 17d |
|  | 2 | **Install Footings** |  | 2026-09-03 | 2026-12-08 |  |  |  |
| SDR-2-CON-CC-ZA-1030 |  | Install Footings | 7d | 2026-09-03 A | 2026-12-08 | SDR-2-CON-CC-ZA-1000 FF, SDR-2-PRO-DEL-E-1120 FF, SDR-2-PRO-DEL-E-1110 FF, SDR-2-PRO-DEL-E-1140 FF, SDR-2-PRO-DEL-E-1080 FF | 30% | 17d |
|  | 3 | **Backfilling** |  | 2026-12-09 | 2026-12-16 |  |  |  |
| SDR-2-CON-CC-ZA-1050 |  | Backfilling 1Sst & 2nd Fix Works | 7d | 2026-12-09 | 2026-12-16 | SDR-2-CON-CC-ZA-1030 SS, SDR-2-CON-CC-ZA-1030 |  | 17d |
|  | 4 | **Install pole** |  | 2026-12-17 | 2026-12-26 |  |  |  |
| SDR-2-CON-CC-ZA-1060 |  | Install Pole | 8d | 2026-12-17 | 2026-12-26 | SDR-2-PRO-DEL-E-1150, SDR-2-CON-CC-ZA-1050 |  | 17d |
|  | 2 | **25m Pole Package** |  | 2026-08-01 | 2027-04-13 |  |  |  |
|  | 1 | **Excavation** |  | 2026-08-01 | 2026-12-26 |  |  |  |
| SDR-2-CON-CC-ZA-1080 |  | 25 Meters Pole Excavation | 21d | 2026-08-01 A | 2026-12-26 | SDR-2-PRO-ST-E-1090, SDR-2-PRO-MAS-C-1090, SDR-2-PRO-DEL-E-1150 FF, SDR-2-PRO-ST-C-1080 FF, SDR-2-CON-CC-ZA-1060 FF, SDR-2-PRO-ST-E-1160 FF, SDR-2-PRO-ST-E-1150 FF, SDR-2-PRO-MAS-E-1030 | 50% | 17d |
|  | 2 | **Install Footings** |  | 2026-09-03 | 2026-12-26 |  |  |  |
| SDR-2-CON-CC-ZA-1090 |  | 25 Meters pole installation Footings | 20d | 2026-09-03 A | 2026-12-26 | SDR-2-PRO-MAL-E-1110, SDR-2-CON-CC-ZA-1080 FF, SDR-2-PRO-DEL-E-1160 FF, SDR-2-PRO-DEL-E-1190 FF, SDR-2-PRO-DEL-E-1180 FF, SDR-2-PRO-DEL-E-1170 FF, SDR-2-PRO-ST-C-1090 FF | 30% | 46d |
|  | 3 | **Backfilling** |  | 2027-02-18 | 2027-03-20 |  |  |  |
| SDR-2-CON-CC-ZA-1100 |  | 25 Meters pole Backfilling | 21d | 2027-02-18 | 2027-03-20 | SDR-2-CON-SL-ZA-1400, SDR-2-CON-SL-ZA-2890, SDR-2-CON-SL-ZA-1100, SDR-2-CON-TE-ZA-1050, SDR-2-CON-CC-ZA-1090 FS+8d |  | 8d |
|  | 4 | **Install pole** |  | 2027-03-21 | 2027-04-13 |  |  |  |
| SDR-2-CON-CC-ZA-1110 |  | 25 Meters pole installation | 21d | 2027-03-21 | 2027-04-13 | SDR-2-CON-CC-ZA-1100 |  | 8d |
|  | 3 | **7m Pole Package** |  | 2026-08-01 | 2027-02-23 |  |  |  |
|  | 1 | **Excavation** |  | 2026-08-01 | 2026-12-26 |  |  |  |
| SDR-2-CON-CC-ZA-1240 |  | 7m Meters Pole Excavation | 21d | 2026-08-01 A | 2026-12-26 | SDR-2-CON-CC-ZA-1080 FF, SDR-2-CON-ST-ZA-6330 FF, SDR-2-PRO-ST-E-1190 FF | 50% | 17d |
|  | 2 | **Install Footings** |  | 2026-09-03 | 2026-12-26 |  |  |  |
| SDR-2-CON-CC-ZA-1250 |  | 7m Meters pole installation Footings | 21d | 2026-09-03 A | 2026-12-26 | SDR-2-CON-CC-ZA-1240 FF | 30% | 46d |
|  | 3 | **Backfilling** |  | 2027-01-04 | 2027-01-27 |  |  |  |
| SDR-2-CON-CC-ZA-1260 |  | 7m Meters pole Backfilling | 21d | 2027-01-04 | 2027-01-27 | SDR-2-CON-RW-ZG-2500, SDR-2-CON-TE-ZA-1050, SDR-2-CON-CC-ZA-1250 FS+7d |  | 46d |
|  | 4 | **Install pole** |  | 2027-01-30 | 2027-02-23 |  |  |  |
| SDR-2-CON-CC-ZA-1270 |  | 7 Meters pole Installation | 21d | 2027-01-30 | 2027-02-23 | SDR-2-CON-RW-ZG-1960, SDR-2-CON-CC-ZA-1260 FS+1d |  | 46d |
|  | 4 | **35m Pole Package** |  | 2026-08-01 | 2027-04-13 |  |  |  |
|  | 1 | **Excavation** |  | 2026-08-01 | 2026-12-26 |  |  |  |
| SDR-2-CON-CC-ZA-1380 |  | 35m Meters Pole Excavation | 18d | 2026-08-01 A | 2026-12-26 | SDR-2-CON-CC-ZA-1240 FF, SDR-2-PRO-ST-E-1180 FF, SDR-2-PRO-ST-E-1210 FF, SDR-2-PRO-ST-E-1220 FF, SDR-2-PRO-ST-E-1230 FF | 50% | 17d |
|  | 2 | **Install Footings** |  | 2026-09-03 | 2026-12-27 |  |  |  |
| SDR-2-CON-CC-ZA-1390 |  | 35m Meters pole installation Footings | 15d | 2026-09-03 A | 2026-12-27 | SDR-2-CON-CC-ZA-1380 FF, SDR-2-CON-SL-ZA-3100 FF | 30% | 59d |
|  | 3 | **Backfilling** |  | 2027-02-25 | 2027-03-21 |  |  |  |
| SDR-2-CON-CC-ZA-1400 |  | 35m Meters pole Backfilling | 17d | 2027-02-25 | 2027-03-21 | SDR-2-CON-MV-ZA-1300, SDR-2-CON-SL-ZA-3580, SDR-2-CON-SL-ZA-3550, SDR-2-CON-SL-ZA-3520, SDR-2-CON-SL-ZA-2860, SDR-2-CON-SL-ZA-2840, SDR-2-CON-SL-ZA-2800, SDR-2-CON-TE-ZA-3280, SDR-2-CON-CC-ZA-1390 |  | 8d |
|  | 4 | **Install pole** |  | 2027-03-22 | 2027-04-13 |  |  |  |
| SDR-2-CON-CC-ZA-1410 |  | 35 Meters pole Installation | 20d | 2027-03-22 | 2027-04-13 | SDR-2-PRO-DEL-E-1200 SS, SDR-2-CON-SL-ZA-2820, SDR-2-CON-CC-ZA-1400 |  | 8d |
|  | 5 | **Control Room** |  | 2027-01-13 | 2027-02-04 |  |  |  |
| SDR-2-CON-CC-ZA-1500 |  | Existing Control Room Preparation to accomodate the new equipment | 6d | 2027-01-13 | 2027-01-19 | SDR-2-PRO-ST-E-1240, SDR-2-CON-CC-ZA-1380 FS+15d |  | 17d |
| SDR-2-CON-CC-ZA-1510 |  | VMS Server | 4d | 2027-01-13 | 2027-01-17 | SDR-2-CON-MV-ZA-1300, SDR-2-CON-SL-ZA-1400, SDR-2-CON-CC-ZA-1500 SS |  | 17d |
| SDR-2-CON-CC-ZA-1520 |  | Surveillance-optimized server for recording CCTV support simultaneous cameras stream and recording at high resolution | 4d | 2027-01-14 | 2027-01-18 | SDR-2-CON-CC-ZA-1510 SS+1d |  | 17d |
| SDR-2-CON-CC-ZA-1530 |  | Video analytic computing hardware | 4d | 2027-01-16 | 2027-01-19 | SDR-2-CON-SL-ZA-1400, SDR-2-CON-CC-ZA-1520 SS+1d |  | 17d |
| SDR-2-CON-CC-ZA-1540 |  | Workstation | 8d | 2027-01-17 | 2027-01-25 | SDR-2-CON-CC-ZA-1530 SS+1d, SDR-2-PRO-MAL-E-1150 |  | 17d |
| SDR-2-CON-CC-ZA-1550 |  | Professional LED screen 32 inch for workstations | 4d | 2027-01-18 | 2027-01-21 | SDR-2-CON-CC-ZA-1540 SS+1d |  | 17d |
| SDR-2-CON-CC-ZA-1560 |  | Professional 55" video wall cube | 4d | 2027-01-20 | 2027-01-24 | SDR-2-CON-SL-ZA-1400, SDR-2-CON-CC-ZA-1550 SS+2d, SDR-2-PRO-MAL-E-1160 |  | 17d |
| SDR-2-CON-CC-ZA-1570 |  | Industrial Rack-Mount Managed Modular Gigabit Ethernet PoE Switch (24-Port) for outdoor application | 8d | 2027-01-26 | 2027-02-03 | SDR-2-CON-CC-ZA-1560 FS+1d, SDR-2-PRO-MAL-E-1140 |  | 17d |
| SDR-2-CON-CC-ZA-1580 |  | SFP 1000Base-X SM | 7d | 2027-01-26 | 2027-02-02 | SDR-2-CON-CC-ZA-1570 SS |  | 17d |
| SDR-2-CON-CC-ZA-1590 |  | Professional joystick for accurate control of PTZ and PT Thermal Cameras. | 4d | 2027-01-27 | 2027-01-31 | SDR-2-CON-CC-ZA-1580 SS+1d |  | 17d |
| SDR-2-CON-CC-ZA-1600 |  | Fiber patch panel including all related accessories | 7d | 2027-01-28 | 2027-02-04 | SDR-2-CON-CC-ZA-1590 SS+1d |  | 17d |
| SDR-2-CON-CC-ZA-1610 |  | UPS 5000VA to power for all servers, monitor, and switch in the cabinet | 4d | 2027-01-28 | 2027-02-01 | SDR-2-CON-CC-ZA-1600 SS, SDR-2-PRO-MAL-E-1190 |  | 17d |
| SDR-2-CON-CC-ZA-1620 |  | Outdoor Carrier Class Shielded Ethernet Cable for P-to-P access points 305 meter | 7d | 2027-01-28 | 2027-02-04 | SDR-2-CON-CC-ZA-1610 SS |  | 39d |
|  | 6 | **Licenses,Documentation,Testing and Training** |  | 2027-02-01 | 2027-02-07 |  |  |  |
| SDR-2-CON-CC-ZA-1630 |  | VMS Lifetime Licenses | 6d | 2027-02-01 | 2027-02-07 | SDR-2-CON-CC-ZA-1590 |  | 61d |
| SDR-2-CON-CC-ZA-1640 |  | Camera-Interlink License | 6d | 2027-02-01 | 2027-02-07 | SDR-2-CON-CC-ZA-1630 SS, SDR-2-CON-SL-ZA-1400 |  | 61d |
| SDR-2-CON-CC-ZA-1650 |  | Video analytics license package | 4d | 2027-02-01 | 2027-02-04 | SDR-2-CON-SL-ZA-3170, SDR-2-CON-SL-ZA-3090, SDR-2-CON-CC-ZA-1640 SS |  | 61d |
| SDR-2-CON-CC-ZA-1660 |  | Video analytics license for ANPR | 4d | 2027-02-01 | 2027-02-04 | SDR-2-CON-CC-ZA-1650 SS |  | 61d |
|  | ZG | **ZONE G** |  | 2026-07-30 | 2027-04-13 |  |  |  |
|  | 1 | **Poles 1st and 2nd Fix Works** |  | 2026-07-30 | 2026-10-22 |  |  |  |
|  | 1 | **Excavation** |  | 2026-07-30 | 2026-10-05 |  |  |  |
| SDR-2-CON-CC-ZA-1670 |  | Excavation 1Sst & 2nd Fix Works | 7d | 2026-07-30 A | 2026-10-05 | SDR-2-CON-MV-ZA-1000 FF | 50% | 25d |
|  | 2 | **Install Footings** |  | 2026-09-03 | 2026-10-05 |  |  |  |
| SDR-2-CON-CC-ZA-1700 |  | Install Footings | 7d | 2026-09-03 A | 2026-10-05 | SDR-2-CON-CC-ZA-1670 FF | 30% | 25d |
|  | 3 | **Backfilling** |  | 2026-10-06 | 2026-10-13 |  |  |  |
| SDR-2-CON-CC-ZA-1720 |  | Backfilling 1Sst & 2nd Fix Works | 7d | 2026-10-06 | 2026-10-13 | SDR-2-CON-CC-ZA-1700 |  | 25d |
|  | 4 | **Install pole** |  | 2026-10-14 | 2026-10-22 |  |  |  |
| SDR-2-CON-CC-ZA-1730 |  | Install Pole | 8d | 2026-10-14 | 2026-10-22 | SDR-2-CON-CC-ZA-1720 |  | 25d |
|  | 2 | **25m Pole Package** |  | 2026-09-03 | 2027-01-14 |  |  |  |
|  | 1 | **Excavation** |  | 2026-09-03 | 2026-10-22 |  |  |  |
| SDR-2-CON-CC-ZA-1750 |  | 25 Meters Pole Excavation | 20d | 2026-09-03 A | 2026-10-22 | SDR-2-CON-CC-ZA-1730 FF | 50% | 25d |
|  | 2 | **Install Footings** |  | 2026-10-24 | 2026-11-16 |  |  |  |
| SDR-2-CON-CC-ZA-1760 |  | 25 Meters pole installation Footings | 21d | 2026-10-24 | 2026-11-16 | SDR-2-CON-CC-ZA-1750 |  | 25d |

| ID | WBS | Task | Duration | Start | Finish | Predecessors | Complete | Total float |
| --- | --- | --- | --- | --- | --- | --- | --- | --- |
|  | 3 | **Backfilling** |  | 2026-11-17 | 2026-12-09 |  |  |  |
| SDR-2-CON-CC-ZA-1770 |  | 25 Meters pole Backfilling | 20d | 2026-11-17 | 2026-12-09 | SDR-2-CON-CC-ZA-1760 |  | 25d |
|  | 4 | **Install pole** |  | 2026-12-22 | 2027-01-14 |  |  |  |
| SDR-2-CON-CC-ZA-1780 |  | 25 Meters pole installation | 21d | 2026-12-22 | 2027-01-14 | SDR-2-CON-CC-ZA-1770 FS+10d |  | 25d |
|  | 3 | **7m Pole Package** |  | 2026-09-03 | 2027-02-25 |  |  |  |
|  | 1 | **Excavation** |  | 2026-09-03 | 2026-10-22 |  |  |  |
| SDR-2-CON-CC-ZA-1790 |  | 7m Meters Pole Excavation | 20d | 2026-09-03 A | 2026-10-22 | SDR-2-CON-CC-ZA-1750 FF | 50% | 29d |
|  | 2 | **Install Footings** |  | 2026-10-24 | 2026-11-15 |  |  |  |
| SDR-2-CON-CC-ZA-1800 |  | 7m Meters pole installation Footings | 20d | 2026-10-24 | 2026-11-15 | SDR-2-CON-CC-ZA-1790 |  | 57d |
|  | 3 | **Backfilling** |  | 2026-11-16 | 2026-12-08 |  |  |  |
| SDR-2-CON-CC-ZA-1810 |  | 7m Meters pole Backfilling | 20d | 2026-11-16 | 2026-12-08 | SDR-2-CON-CC-ZA-1800 |  | 57d |
|  | 4 | **Install pole** |  | 2027-02-01 | 2027-02-25 |  |  |  |
| SDR-2-CON-CC-ZA-1820 |  | 7 Meters pole Installation | 21d | 2027-02-01 | 2027-02-25 | SDR-2-CON-SL-ZA-3050 SS, SDR-2-CON-SL-ZA-3010, SDR-2-CON-SL-ZA-2970, SDR-2-CON-SL-ZA-1400, SDR-2-CON-CC-ZA-1810 FS+11d |  | 22d |
|  | 4 | **35m Pole Package** |  | 2026-09-03 | 2026-12-21 |  |  |  |
|  | 1 | **Excavation** |  | 2026-09-03 | 2026-10-22 |  |  |  |
| SDR-2-CON-CC-ZA-1830 |  | 35m Meters Pole Excavation | 21d | 2026-09-03 A | 2026-10-22 | SDR-2-CON-CC-ZA-1790 FF | 50% | 46d |
|  | 2 | **Install Footings** |  | 2026-10-24 | 2026-11-15 |  |  |  |
| SDR-2-CON-CC-ZA-1840 |  | 35m Meters pole installation Footings | 20d | 2026-10-24 | 2026-11-15 | SDR-2-CON-CC-ZA-1830 |  | 46d |
|  | 3 | **Backfilling** |  | 2026-10-27 | 2026-11-18 |  |  |  |
| SDR-2-CON-CC-ZA-1850 |  | 35m Meters pole Backfilling | 20d | 2026-10-27 | 2026-11-18 | SDR-2-CON-CC-ZA-1840 SS+3d |  | 46d |
|  | 4 | **Install pole** |  | 2026-11-30 | 2026-12-21 |  |  |  |
| SDR-2-CON-CC-ZA-1860 |  | 35 Meters pole Installation | 19d | 2026-11-30 | 2026-12-21 | SDR-2-CON-CC-ZA-1850 FS+9d |  | 46d |
|  | 5 | **Control Room** |  | 2026-10-24 | 2026-12-21 |  |  |  |
| SDR-2-CON-CC-ZG-1500 |  | Existing Control Room Preparation to accomodate the new equipments | 4d | 2026-10-24 | 2026-10-27 | SDR-2-CON-CC-ZA-1790 |  | 30d |
| SDR-2-CON-CC-ZG-1540 |  | Workstation | 12d | 2026-10-24 | 2026-11-05 | SDR-2-CON-CC-ZA-1790 |  | 29d |
| SDR-2-CON-CC-ZG-1550 |  | Professional LED screen 32 inch for workstations | 4d | 2026-10-24 | 2026-10-27 | SDR-2-CON-CC-ZG-1540 SS |  | 29d |
| SDR-2-CON-CC-ZG-1510 |  | VMS Server | 5d | 2026-10-28 | 2026-11-02 | SDR-2-CON-CC-ZG-1500 |  | 30d |
| SDR-2-CON-CC-ZG-1560 |  | Professional 55" video wall cube | 4d | 2026-10-28 | 2026-11-01 | SDR-2-CON-CC-ZG-1550 |  | 29d |
| SDR-2-CON-CC-ZG-1570 |  | Industrial Rack-Mount Managed Modular Gigabit Ethernet PoE Switch (24-Port) for outdoor application | 9d | 2026-10-31 | 2026-11-09 | SDR-2-CON-CC-ZG-1560 SS+2d |  | 29d |
| SDR-2-CON-CC-ZG-1580 |  | SFP 1000Base-X SM | 4d | 2026-10-31 | 2026-11-03 | SDR-2-CON-CC-ZG-1570 SS |  | 29d |
| SDR-2-CON-CC-ZG-1520 |  | Surveillance-optimized server for recording CCTV support simultaneous cameras stream and recording at high resolution | 4d | 2026-11-03 | 2026-11-07 | SDR-2-CON-CC-ZG-1510 |  | 30d |
| SDR-2-CON-CC-ZG-1590 |  | Professional joystick for accurate control of PTZ and PT Thermal Cameras. | 4d | 2026-11-04 | 2026-11-08 | SDR-2-CON-CC-ZG-1580 |  | 29d |
| SDR-2-CON-CC-ZG-1530 |  | Video analytic computing hardware | 4d | 2026-11-08 | 2026-11-11 | SDR-2-CON-CC-ZG-1520 |  | 32d |
| SDR-2-CON-CC-ZG-1600 |  | Fiber patch panel including all related accessories | 4d | 2026-11-09 | 2026-11-12 | SDR-2-CON-CC-ZG-1590 |  | 29d |
| SDR-2-CON-CC-ZG-1610 |  | UPS 5000VA to power for all servers, monitor, and switch in the cabinet | 6d | 2026-11-15 | 2026-11-21 | SDR-2-CON-CC-ZG-1600 SS+5d, SDR-2-CON-CC-ZG-1520 FS+5d |  | 29d |
| SDR-2-CON-CC-ZG-1620 |  | Outdoor Carrier Class Shielded Ethernet Cable for P-to-P access points 305 meter | 4d | 2026-12-17 | 2026-12-21 | SDR-2-CON-CC-ZG-1610 SS+2d, SDR-2-CON-CC-ZA-1860 FF, SDR-2-CON-CC-ZG-1530 FS+6d, SDR-2-CON-CC-ZG-1520 |  | 46d |
|  | 6 | **Licenses,Documentation,Testing and Training** |  | 2026-11-12 | 2027-04-13 |  |  |  |
| SDR-2-CON-CC-ZG-1630 |  | VMS Lifetime Licenses | 2d | 2026-11-12 | 2026-11-14 | SDR-2-CON-CC-ZG-1530 |  | 32d |
| SDR-2-CON-CC-ZG-1640 |  | Camera-Interlink License | 1d | 2026-11-15 | 2026-11-15 | SDR-2-CON-CC-ZG-1630 |  | 32d |
| SDR-2-CON-CC-ZG-1650 |  | Video analytics license package | 1d | 2026-11-15 | 2026-11-15 | SDR-2-CON-CC-ZG-1640 SS |  | 32d |
| SDR-2-CON-CC-ZG-1660 |  | Video analytics license for ANPR | 1d | 2027-04-13 | 2027-04-13 | SDR-2-CON-CC-ZG-1650 SS, SDR-2-CON-CC-ZA-1620 FF, SDR-2-CON-CC-ZA-1410 FF, SDR-2-CON-CC-ZA-1270 FF, SDR-2-CON-CC-ZA-1110 FF |  | 8d |
|  | TC | **Testing & Commissioning** |  | 2027-01-28 | 2027-06-03 |  |  |  |
|  | 1 | **Civil Works** |  | 2027-04-17 | 2027-04-20 |  |  |  |
| SDR-2-TC-CW-1010 |  | Testing & Commissioning of road works | 4d | 2027-04-17 | 2027-04-20 | SDR-2-CON-RW-ZA-1710, SDR-2-CON-RW-ZA-1130, SDR-2-CON-RW-ZA-1430 |  | 15d |
|  | 2 | **Storm Water Drainage Network** |  | 2027-03-03 | 2027-03-22 |  |  |  |
| SDR-2-TC-SWDN-1020 |  | Testing & Commissioning of network work | 12d | 2027-03-03 | 2027-03-22 | SDR-2-CON-ST-ZA-5670, SDR-2-PRO-ST-E-1170, SDR-2-PRO-ST-E-1190, SDR-2-PRO-ST-E-1200, SDR-2-PRO-ST-E-1210, SDR-2-PRO-ST-E-1220, SDR-2-CON-ST-ZA-4020 SS, SDR-2-CON-ST-ZA-4020 |  | 67.1d |
|  | 3 | **Sewerage Network** |  | 2027-05-01 | 2027-05-13 |  |  |  |
| SDR-2-TC-SN-1030 |  | Testing & Commissioning of Sewage Network | 12d | 2027-05-01 | 2027-05-13 | SDR-2-CON-SE-ZA-2440, SDR-2-CON-SE-ZA-2430, SDR-2-CON-SE-ZA-2690, SDR-2-CON-SE-ZA-1050 FS+10d, SDR-2-CON-SE-ZA-1440, SDR-2-CON-SE-ZA-1430, SDR-2-CON-SE-ZA-1530, SDR-2-CON-SE-ZA-1630, SDR-2-CLO-AS-E-1010, SDR-2-CON-SE-ZA-1540 |  | 13d |
|  | 4 | **TSE Network** |  | 2027-05-15 | 2027-06-03 |  |  |  |
| SDR-2-TC-TSE-1040 |  | Testing & Commissioning of TSE Network | 13d | 2027-05-15 | 2027-06-03 | SDR-2-CON-TS-ZA-2640, SDR-2-CON-TS-ZA-2090, SDR-2-CON-TS-ZA-2290, SDR-2-CON-TS-ZA-1930, SDR-2-CON-TS-ZA-1950, SDR-2-CON-TS-ZA-2740, SDR-2-CON-TS-ZA-1070 FF, SDR-2-CON-TS-ZA-2840, SDR-2-CON-TS-ZA-1990, SDR-2-CON-TS-ZA-2390, SDR-2-CON-TS-ZA-2440, SDR-2-CON-TS-ZA-2940, SDR-2-CON-TS-ZA-3040, SDR-2-CON-TS-ZA-2540, SDR-2-CON-TS-ZA-3140, SDR-2-CON-TS-ZA-2540 FF, SDR-2-CON-TS-ZA-2540 SS, SDR-2-CON-TS-ZA-1060 FS+8.5d, SDR-2-TC-SN-1030, SDR-2-CON-TS-ZA-2260, SDR-2-CON-TS-ZA-2590, SDR-2-CON-TS-ZA-3090, SDR-2-CON-TS-ZA-2990, SDR-2-CON-TS-ZA-2490, SDR-2-CON-TS-ZA-2360, SDR-2-CON-TS-ZA-3190, SDR-2-CON-TS-ZA-2190, SDR-2-CON-TS-ZA-2140, SDR-2-CON-TS-ZA-1970, SDR-2-CON-TS-ZA-2890, SDR-2-CON-TS-ZA-2790, SDR-2-CON-TS-ZA-2690, SDR-2-CON-TS-ZA-2090 SS, SDR-2-CON-TS-ZA-1070, SDR-2-CON-TS-ZA-1910 |  | 13d |
|  | 5 | **Portable Water** |  | 2027-05-22 | 2027-05-31 |  |  |  |
| SDR-2-TC-PW-1050 |  | Testing & Commissioning of Potable Network | 9d | 2027-05-22 | 2027-05-31 | SDR-2-CON-PW-ZA-2650, SDR-2-CON-PW-ZA-1070 SS+2d, SDR-2-CON-PW-ZA-2320, SDR-2-CON-PW-ZA-2620, SDR-2-CON-PW-ZA-3200, SDR-2-CON-PW-ZA-3100, SDR-2-CON-PW-ZA-3000, SDR-2-CON-PW-ZA-3700, SDR-2-CON-PW-ZA-2520, SDR-2-CON-PW-ZA-2420, SDR-2-CON-PW-ZA-2900, SDR-2-CON-PW-ZA-3650, SDR-2-CON-PW-ZA-3550, SDR-2-CON-PW-ZA-3450, SDR-2-CON-PW-ZA-3350, SDR-2-CON-PW-ZA-3250, SDR-2-CON-PW-ZA-2800, SDR-2-CON-PW-ZA-2700, SDR-2-CON-PW-ZA-1070 |  | 12d |
|  | 6 | **Electrical Works** |  | 2027-04-14 | 2027-04-21 |  |  |  |
| SDR-2-TC-EW-1060 |  | Testing & Commissioning of Electrical Network | 7d | 2027-04-14 | 2027-04-21 | SDR-2-CON-SL-ZA-2930, SDR-2-CON-SL-ZA-2970, SDR-2-CON-CC-ZA-1820, SDR-2-CON-CC-ZG-1660 |  | 13d |
|  | 7 | **Landscape & Irrigation Works** |  | 2027-05-22 | 2027-05-27 |  |  |  |
| SDR-2-TC-LIW-1070 |  | Testing & Commissioning of Landscape & Irrigation Network | 6d | 2027-05-22 | 2027-05-27 | SDR-2-TC-CCTV-1080, SDR-2-CON-IR-ZA-1010 SS |  | 33d |
|  | 8 | **CCTV Works** |  | 2027-01-28 | 2027-02-08 |  |  |  |
| SDR-2-TC-CCTV-1080 |  | Testing & Commissioning of medium voltage works | 10d | 2027-01-28 | 2027-02-08 | SDR-2-CON-CC-ZA-1860, SDR-2-CON-CC-ZA-1610 SS, SDR-2-CON-CC-ZG-1520 |  | 17d |
|  | CO | **Close Out** |  | 2027-04-14 | 2027-07-04 |  |  |  |
|  | 1 | **As Built Drawings** |  | 2027-04-14 | 2027-06-09 |  |  |  |
|  | 1 | **Civil** |  | 2027-04-14 | 2027-04-27 |  |  |  |
| SDR-2-CLO-AS-C-1000 |  | Civil As-Built Drawing Submission | 7d | 2027-04-14 | 2027-04-21 | SDR-2-CON-RW-ZA-1710, SDR-2-CON-CC-ZG-1660, SDR-2-TC-CCTV-1080 SS, SDR-2-CON-CC-ZA-1660, SDR-2-CON-CC-ZA-1820, SDR-2-CON-CC-ZA-1780, SDR-2-CON-TE-ZA-4530, SDR-2-CON-TE-ZA-4540, SDR-2-CON-TE-ZA-4440, SDR-2-CON-TE-ZA-4450, SDR-2-CON-TE-ZA-4350, SDR-2-CON-TE-ZA-4360, SDR-2-CON-TE-ZA-4260, SDR-2-CON-TE-ZA-4270, SDR-2-CON-MV-ZA-1340, SDR-2-CON-MV-ZA-1300, SDR-2-CON-SL-ZA-3580, SDR-2-CON-SL-ZA-3550, SDR-2-CON-SL-ZA-3520, SDR-2-CON-SL-ZA-3490, SDR-2-CON-SL-ZA-3460, SDR-2-CON-SL-ZA-3410, SDR-2-CON-SL-ZA-3370, SDR-2-CON-SL-ZA-3330, SDR-2-CON-SL-ZA-3290, SDR-2-CON-SL-ZA-3250, SDR-2-CON-TE-ZA-4170, SDR-2-CON-TE-ZA-4180, SDR-2-CON-TE-ZA-4080, SDR-2-CON-TE-ZA-4090, SDR-2-CON-TE-ZA-3990, SDR-2-CON-TE-ZA-4000, SDR-2-CON-TE-ZA-3900, SDR-2-CON-TE-ZA-3910, SDR-2-CON-TE-ZA-3810, SDR-2-CON-TE-ZA-3820, SDR-2-CON-TE-ZA-3720, SDR-2-CON-TE-ZA-3730, SDR-2-CON-TE-ZA-3630, SDR-2-CON-TE-ZA-3640, SDR-2-CON-TE-ZA-3540, SDR-2-CON-TE-ZA-3550, SDR-2-CON-TE-ZA-3450, SDR-2-CON-TE-ZA-3460, SDR-2-CON-TE-ZA-3360, SDR-2-CON-TE-ZA-3370, SDR-2-CON-TE-ZA-3270, SDR-2-CON-TE-ZA-3280, SDR-2-CON-TE-ZA-1060, SDR-2-CON-TE-ZA-1840, SDR-2-CON-MV-ZA-1260, SDR-2-CON-MV-ZA-1220, SDR-2-CON-MV-ZA-1180, SDR-2-CON-MV-ZA-1100, SDR-2-CON-SL-ZA-2860, SDR-2-CON-SL-ZA-2840, SDR-2-CON-SL-ZA-2820, SDR-2-CON-SL-ZA-2800, SDR-2-CON-SL-ZA-2780, SDR-2-CON-SL-ZA-2930, SDR-2-CON-SL-ZA-3210, SDR-2-CON-SL-ZA-3170, SDR-2-CON-SL-ZA-3130, SDR-2-CON-SL-ZA-3090, SDR-2-CON-SL-ZA-3050, SDR-2-CON-SL-ZA-3010, SDR-2-CON-SL-ZA-2970, SDR-2-CON-SL-ZA-1400, SDR-2-CON-SL-ZA-2890, SDR-2-CON-SL-ZA-1100 |  | 8d |
| SDR-2-CLO-AS-C-1010 |  | Civil As-Built Drawing Approvals | 5d | 2027-04-22 | 2027-04-27 | SDR-2-TC-EW-1060 SS, SDR-2-CLO-AS-C-1000, SDR-2-CON-CC-ZG-1660 |  | 8d |
|  | 2 | **Mechanical** |  | 2027-05-23 | 2027-06-09 |  |  |  |
| SDR-2-CLO-AS-M-1000 |  | Mechanical As-Built Drawing Submission | 8d | 2027-05-23 | 2027-05-31 | SDR-2-CON-PW-ZA-3350 FS+5d, SDR-2-CON-PW-ZA-2320, SDR-2-TC-SWDN-1020 SS, SDR-2-CLO-AS-E-1010 SS+7d |  | 8d |
| SDR-2-CLO-AS-M-1010 |  | Mechanical As-Built Drawing Approvals | 8d | 2027-06-01 | 2027-06-09 | SDR-2-CLO-AS-M-1000, SDR-2-CON-ST-ZA-5480 FS+13d, SDR-2-CON-ST-ZA-4730 FS+3d, SDR-2-CON-ST-ZA-4580 |  | 8d |
|  | 3 | **Electrical** |  | 2027-04-14 | 2027-04-29 |  |  |  |
| SDR-2-CLO-AS-E-1000 |  | Electrical As-Built Drawing Submission | 7d | 2027-04-14 | 2027-04-21 | SDR-2-CON-CC-ZG-1620, SDR-2-TC-EW-1060 SS, SDR-2-CON-ST-ZA-6080, SDR-2-CON-ST-ZA-5630 FS+10d |  | 13d |
| SDR-2-CLO-AS-E-1010 |  | Electrical As-Built Drawing Approvals | 7d | 2027-04-22 | 2027-04-29 | SDR-2-CLO-AS-E-1000 |  | 13d |
|  | 2 | **Training and Manuals** |  | 2027-06-10 | 2027-06-26 |  |  |  |

| ID | WBS | Task | Duration | Start | Finish | Predecessors | Total float |
| --- | --- | --- | --- | --- | --- | --- | --- |
| SDR-2-CLO-TM-1000 |  | Training and Manuals | 14d | 2027-06-10 | 2027-06-26 | SDR-2-CLO-AS-M-1010, SDR-2-CLO-AS-E-1010 SS, SDR-2-CON-IR-ZA-2130 FS+1d | 8d |
|  | 3 | **Demobilize Manpower** |  | 2027-06-10 | 2027-06-26 |  |  |
| SDR-2-CLO-DM-1000 |  | Manpower Demobilize | 14d | 2027-06-10 | 2027-06-26 | SDR-2-CLO-TM-1000 SS | 8d |
|  | 4 | **Demobilize Equipment** |  | 2027-06-10 | 2027-06-26 |  |  |
| SDR-2-CLO-DE-1000 |  | Equipments Demobilize | 14d | 2027-06-10 | 2027-06-26 | SDR-2-CLO-DM-1000 SS | 8d |
|  | 5 | **Removal of Site Offices and Structures** |  | 2027-06-10 | 2027-06-26 |  |  |
| SDR-2-CLO-RO-1000 |  | Site Office Removal | 14d | 2027-06-10 | 2027-06-26 | SDR-2-CLO-DE-1000 SS | 8d |
|  | 6 | **Handover** |  | 2027-06-28 | 2027-07-04 |  |  |
| SDR-2-CLO-HO-1000 |  | Project Handover | 5d | 2027-06-28 | 2027-07-04 | SDR-2-ENG-APP-M-1010, SDR-2-PREL-1100, SDR-2-CON-SE-ZA-1610, SDR-2-CON-IR-ZA-2980 FF, SDR-2-TC-LIW-1070 FF, SDR-2-CLO-DE-1000 SS, SDR-2-CLO-RO-1000 SS, SDR-2-CON-RW-ZA-1150, SDR-2-CON-RW-ZA-1290, SDR-2-CON-ST-ZA-3310, SDR-2-CON-TS-ZA-1080, SDR-2-CON-TS-ZA-1260, SDR-2-CON-TS-ZA-1710, SDR-2-CON-TS-ZA-1800, SDR-2-CON-TE-ZA-1020, SDR-2-CON-TE-ZA-1060, SDR-2-CON-LS-ZA-1060 SS, SDR-2-CON-CC-ZA-1620, SDR-2-CON-CC-ZA-1660, SDR-2-CON-CC-ZG-1660, SDR-2-TC-CCTV-1080, SDR-2-CON-LS-ZG-1060 SS, SDR-2-CON-PW-ZA-1080, SDR-2-PRO-MAS-C-1100, SDR-2-PRO-MAL-M-1060, SDR-2-PRO-MAL-M-1070, SDR-2-CON-SL-ZA-2690 SS, SDR-2-PRO-MAS-E-1000, SDR-2-PRO-MAL-E-1030, SDR-2-PRO-MAL-E-1130, SDR-2-PRO-MAL-E-1120, SDR-2-CON-CC-ZA-1110 SS, SDR-2-PRO-MAL-E-1170, SDR-2-CON-CC-ZA-1270, SDR-2-CON-CC-ZA-1410 SS, SDR-2-CON-IR-ZA-1030 FF, SDR-2-PRO-MAS-E-1020, SDR-2-CON-SL-ZA-1110, SDR-2-PRO-MAS-C-1080, SDR-2-CON-MV-ZA-1150, SDR-2-PRO-MAL-M-1030, SDR-2-PRO-MAL-M-1040, SDR-2-PRO-MAL-E-1010, SDR-2-PRO-MAL-E-1020, SDR-2-PRO-MAL-E-1180, SDR-2-PRO-MAL-E-1060, SDR-2-CON-RW-ZA-1050, SDR-2-CON-RW-ZA-1200, SDR-2-CON-RW-ZA-1340, SDR-2-CON-RW-ZA-1430, SDR-2-CON-RW-ZA-1480, SDR-2-CON-RW-ZA-1570, SDR-2-CON-RW-ZA-1620, SDR-2-CON-RW-ZA-1710, SDR-2-CON-RW-ZA-1760, SDR-2-CON-RW-ZA-1850, SDR-2-CON-RW-ZA-1900, SDR-2-CON-RW-ZA-1990, SDR-2-CON-RW-ZA-2040, SDR-2-CON-RW-ZA-2130, SDR-2-CON-RW-ZA-2180, SDR-2-CON-RW-ZA-2270, SDR-2-CON-RW-ZA-2320, SDR-2-CON-RW-ZA-2410, SDR-2-CON-RW-ZA-2460, SDR-2-CON-RW-ZA-2550, SDR-2-CON-RW-ZA-2600, SDR-2-CON-RW-ZA-2690, SDR-2-CON-RW-ZA-2740, SDR-2-CON-RW-ZA-2830, SDR-2-CON-RW-ZG-1060, SDR-2-CON-RW-ZG-1210, SDR-2-CON-RW-ZG-1310, SDR-2-CON-RW-ZG-1360, SDR-2-CON-RW-ZG-1460, SDR-2-CON-RW-ZG-1510, SDR-2-CON-RW-ZG-1610, SDR-2-CON-RW-ZG-1660, SDR-2-CON-RW-ZG-1760, SDR-2-CON-RW-ZG-1810, SDR-2-CON-RW-ZG-1910, SDR-2-CON-RW-ZG-1960, SDR-2-CON-RW-ZG-2060, SDR-2-CON-RW-ZG-2110, SDR-2-CON-RW-ZG-2210, SDR-2-CON-ST-ZA-3760, SDR-2-CON-ST-ZA-4130, SDR-2-CON-ST-ZA-4280, SDR-2-CON-ST-ZA-4430, SDR-2-CON-ST-ZA-4580, SDR-2-CON-ST-ZA-4730, SDR-2-CON-ST-ZA-4880, SDR-2-CON-ST-ZA-5030, SDR-2-CON-ST-ZA-5070, SDR-2-CON-ST-ZA-5180, SDR-2-CON-ST-ZA-5220, SDR-2-CON-ST-ZA-5930, SDR-2-CON-ST-ZA-5970, SDR-2-CON-ST-ZA-5480, SDR-2-CON-ST-ZA-5630, SDR-2-CON-ST-ZA-6000, SDR-2-CON-ST-ZA-6080, SDR-2-CON-SE-ZA-1440, SDR-2-CON-SE-ZA-1540, SDR-2-CON-SE-ZA-1740, SDR-2-CON-SE-ZA-1840, SDR-2-CON-SE-ZA-1940, SDR-2-CON-SE-ZA-2040, SDR-2-CON-SE-ZA-2140, SDR-2-CON-SE-ZA-2240, SDR-2-CON-SE-ZA-2340, SDR-2-CON-SE-ZA-2440, SDR-2-CON-TS-ZA-1910, SDR-2-CON-TS-ZA-1070, SDR-2-CON-TS-ZA-2260, SDR-2-CON-TS-ZA-2040, SDR-2-CON-TS-ZA-2090, SDR-2-CON-TS-ZA-2690, SDR-2-CON-TS-ZA-2890, SDR-2-CON-TS-ZA-1960, SDR-2-CON-TS-ZA-1970, SDR-2-CON-TS-ZA-2140, SDR-2-CON-TS-ZA-1980, SDR-2-CON-TS-ZA-2190, SDR-2-CON-TS-ZA-3190, SDR-2-CON-TS-ZA-2360, SDR-2-CON-TS-ZA-2490, SDR-2-CON-TS-ZA-2990, SDR-2-CON-TS-ZA-3090, SDR-2-CON-TS-ZA-2590, SDR-2-CON-PW-ZA-2320, SDR-2-CON-PW-ZA-2700, SDR-2-CON-PW-ZA-2800, SDR-2-CON-PW-ZA-3250, SDR-2-CON-PW-ZA-3350, SDR-2-CON-PW-ZA-3450, SDR-2-CON-PW-ZA-3550, SDR-2-CON-PW-ZA-3650, SDR-2-CON-PW-ZA-2900, SDR-2-CON-PW-ZA-2420, SDR-2-CON-PW-ZA-2520, SDR-2-CON-PW-ZA-3700, SDR-2-CON-PW-ZA-3000, SDR-2-CON-PW-ZA-3100, SDR-2-CON-PW-ZA-3200, SDR-2-CON-PW-ZA-2620, SDR-2-CON-SL-ZA-1100, SDR-2-CON-SL-ZA-2890, SDR-2-CON-SL-ZA-1400, SDR-2-CON-SL-ZA-2970, SDR-2-CON-SL-ZA-3010, SDR-2-CON-SL-ZA-3050, SDR-2-CON-SL-ZA-3090, SDR-2-CON-SL-ZA-3130, SDR-2-CON-SL-ZA-3170, SDR-2-CON-SL-ZA-3210, SDR-2-CON-SL-ZA-2930, SDR-2-CON-SL-ZA-2780, SDR-2-CON-SL-ZA-2800, SDR-2-CON-SL-ZA-2820, SDR-2-CON-SL-ZA-2840, SDR-2-CON-SL-ZA-2860, SDR-2-CON-MV-ZA-1100, SDR-2-CON-MV-ZA-1180, SDR-2-CON-MV-ZA-1220, SDR-2-CON-MV-ZA-1260, SDR-2-CON-TE-ZA-1840, SDR-2-CON-TE-ZA-3280, SDR-2-CON-TE-ZA-3270, SDR-2-CON-TE-ZA-3370, SDR-2-CON-TE-ZA-3360, SDR-2-CON-TE-ZA-3460, SDR-2-CON-TE-ZA-3450, SDR-2-CON-TE-ZA-3550, SDR-2-CON-TE-ZA-3540, SDR-2-CON-TE-ZA-3640, SDR-2-CON-TE-ZA-3630, SDR-2-CON-TE-ZA-3730, SDR-2-CON-TE-ZA-3720, SDR-2-CON-TE-ZA-3820, SDR-2-CON-TE-ZA-3810, SDR-2-CON-TE-ZA-3910, SDR-2-CON-TE-ZA-3900, SDR-2-CON-TE-ZA-4000, SDR-2-CON-TE-ZA-3990, SDR-2-CON-TE-ZA-4090, SDR-2-CON-TE-ZA-4080, SDR-2-CON-TE-ZA-4180, SDR-2-CON-TE-ZA-4170, SDR-2-CON-SL-ZA-3250, SDR-2-CON-SL-ZA-3290, SDR-2-CON-SL-ZA-3330, SDR-2-CON-SL-ZA-3370, SDR-2-CON-SL-ZA-3410, SDR-2-CON-SL-ZA-3460, SDR-2-CON-SL-ZA-3490, SDR-2-CON-SL-ZA-3520, SDR-2-CON-SL-ZA-3550, SDR-2-CON-SL-ZA-3580, SDR-2-CON-MV-ZA-1300, SDR-2-CON-MV-ZA-1340, SDR-2-CON-TE-ZA-4270, SDR-2-CON-TE-ZA-4260, SDR-2-CON-TE-ZA-4360, SDR-2-CON-TE-ZA-4350, SDR-2-CON-TE-ZA-4450, SDR-2-CON-TE-ZA-4440, SDR-2-CON-TE-ZA-4540, SDR-2-CON-TE-ZA-4530, SDR-2-CON-IR-ZA-2150 FF, SDR-2-CON-IR-ZA-2190 SS+1d | 1.7d |

## Version 4 (data date 2026-10-12, saved 2026-10-12, file Sudair 2 P2 12.10.26 INFRA.xer)

Last finish stays 2027-07-05. Complete tasks 711 → 743.

Changed:

| ID | Task | Start | Finish | Duration | Complete | Total float | Predecessors |
| --- | --- | --- | --- | --- | --- | --- | --- |
| 3 | **Contractual Milestone** |  | 2027-06-29 → 2027-06-28 (-1d) |  |  |  |  |
| SDR-2-MILS-1060 | Completion of medium voltage works | 2027-02-04 → 2027-02-11 (+7d) | 2027-02-04 → 2027-02-11 (+7d) |  |  | 39d → 33d |  |
| SDR-2-MILS-1050 | Completion of road works | 2027-04-03 → 2027-04-10 (+7d) | 2027-04-03 → 2027-04-10 (+7d) |  |  | 30d → 24d |  |
| SDR-2-MILS-1070 | Completion of All Network work | 2027-04-28 → 2027-05-05 (+7d) | 2027-04-28 → 2027-05-05 (+7d) |  |  | 53d → 47d |  |
| SDR-2-MILS-1080 | Completion of finishing works in the project | 2027-06-29 → 2027-06-28 (-1d) | 2027-06-29 → 2027-06-28 (-1d) |  |  | 5.7d → 6.44d |  |
| 2 | **Phases Milestone** | 2026-10-05 → 2026-10-12 (+7d) |  |  |  |  |  |
| SDR-2-MILS-1090 | Engineering Phase Finish Milestone | 2026-10-05 → 2026-10-12 (+7d) | 2026-10-05 → 2026-10-12 (+7d) |  |  | 71d → 78d |  |
| SDR-2-MILS-1100 | Procurment Phase Finish Milestone | 2026-11-11 → 2026-11-18 (+7d) | 2026-11-11 → 2026-11-18 (+7d) |  |  | 66.1d → 60.1d |  |
| EN | **Engineering** |  | 2026-10-05 → 2026-10-12 (+7d) |  |  |  |  |
| 1 | **Shop Drawings Stage** |  | 2026-10-05 → 2026-10-12 (+7d) |  |  |  |  |
| 4 | **Approvals** |  | 2026-10-05 → 2026-10-12 (+7d) |  |  |  |  |
| 9 | **Electrical** |  | 2026-10-05 → 2026-10-12 (+7d) |  |  |  |  |
| SDR-2-ENG-APP-E-1000 | MV Network Layout Approval |  | 2026-10-05 → 2026-10-12 (+7d) |  |  | 0d → 2d |  |
| SDR-2-ENG-APP-E-1010 | MV Single Line Diagram Approval |  | 2026-10-05 → 2026-10-12 (+7d) |  |  | 0d → 2d |  |
| SDR-2-ENG-APP-E-1020 | Design Of MV Loops Approval |  | 2026-10-05 → 2026-10-12 (+7d) |  |  | 0d → 2d |  |
| SDR-2-ENG-APP-E-1030 | Loads For Plots Approval |  | 2026-10-05 → 2026-10-12 (+7d) |  |  | 0d → 2d |  |
| SDR-2-ENG-APP-E-1040 | Distribution Substation Approval |  | 2026-10-05 → 2026-10-12 (+7d) |  |  | 0d → 2d |  |
| SDR-2-ENG-APP-E-1050 | MV Trench Configuration Details Approval |  | 2026-10-05 → 2026-10-12 (+7d) |  |  | 0d → 2d |  |
| SDR-2-ENG-APP-E-1060 | MV Electrical Duct Banks Details Approval |  | 2026-10-05 → 2026-10-12 (+7d) |  |  | 0d → 2d |  |
| SDR-2-ENG-APP-E-1070 | Distribution Transformers Approval |  | 2026-10-05 → 2026-10-12 (+7d) |  |  | 0d → 2d |  |
| 11 | **CCTV** |  | 2026-10-05 → 2026-10-12 (+7d) |  |  |  |  |
| SDR-2-ENG-APP-E-1280 | Typical Solar Panel Installation Detail Approval |  | 2026-10-05 → 2026-10-12 (+7d) |  |  | 0d → 2d |  |
| 3 | **Materials** |  | 2026-10-05 → 2026-10-12 (+7d) |  |  |  |  |
| 6 | **Materials Approval** |  | 2026-10-05 → 2026-10-12 (+7d) |  |  |  |  |
| 2 | **Short Lead Items** |  | 2026-10-05 → 2026-10-12 (+7d) |  |  |  |  |
| 1 | **Civil** |  | 2026-10-05 → 2026-10-12 (+7d) |  |  |  |  |
| SDR-2-PRO-MAS-C-1030 | Road Marking Approve |  | 2026-10-05 → 2026-10-12 (+7d) |  |  | 0d → 2d |  |
| SDR-2-PRO-MAS-C-1060 | Traffic Signage Approve |  | 2026-10-05 → 2026-10-12 (+7d) |  |  | 0d → 2d |  |
| PR | **Procurement** |  | 2027-01-24 → 2027-01-31 (+7d) |  |  |  |  |
| 3 | **Purchase Order** |  | 2026-10-05 → 2026-10-26 (+21d) |  |  |  |  |
| 1 | **Civil** |  | 2026-10-05 → 2026-10-26 (+21d) |  |  |  |  |
| SDR-2-PRO-PO-C-1020 | Asphalt Mix PO |  | 2026-10-05 → 2026-10-12 (+7d) |  | 0% → 15% | 70d → 77d |  |
| SDR-2-PRO-PO-C-1030 | Kerbstone PO |  | 2026-10-05 → 2026-10-12 (+7d) |  | 0% → 10% | 33.9d → 35.9d |  |
| SDR-2-PRO-PO-C-1050 | Interlock Tiles PO |  | 2026-10-05 → 2026-10-12 (+7d) |  | 0% → 10% | 92d → 100d |  |
| SDR-2-PRO-PO-C-1040 | Road Marking PO |  | 2026-10-05 → 2026-10-12 (+7d) |  |  | 3d → 12d |  |
| SDR-2-PRO-PO-C-1090 | Protection Bollards for CCTV Pole PO |  | 2026-10-05 → 2026-10-12 (+7d) |  |  | 94d → 88d |  |
| SDR-2-PRO-PO-C-1060 | Traffic Signage PO | 2026-04-30 A → 2026-10-12 (+165d) | 2026-10-05 → 2026-10-26 (+21d) |  |  | 12d → 3d |  |
| SDR-2-PRO-PO-C-1080 | Fence for Electrical works PO | 2026-08-05 A → 2026-10-12 (+68d) | 2026-10-05 → 2026-10-26 (+21d) |  |  | 42d → 24d |  |
| SDR-2-PRO-PO-C-1100 | Protection (Guard rail) for Fire hydrant PO | 2026-04-26 A → 2026-10-12 (+169d) | 2026-10-05 → 2026-10-19 (+14d) | 13d → 7d |  | 1d → 10d | SDR-2-PRO-MAS-C-1100, SDR-2-MILS-1000 FS+103d → SDR-2-PRO-MAS-C-1100, SDR-2-MILS-1000 FS+100d |
| 3 | **Electrical** |  | 2026-10-05 → 2026-10-12 (+7d) |  |  |  |  |
| SDR-2-PRO-PO-E-1100 | Unit Substation PO |  | 2026-10-05 → 2026-10-12 (+7d) |  |  | 11d → 5d |  |
| SDR-2-PRO-PO-E-1150 | CCTV Poles including all hardwares PO |  | 2026-10-05 → 2026-10-12 (+7d) |  |  | 72d → 66d |  |
| SDR-2-PRO-PO-E-1160 | CCTV Cables "Power" PO |  | 2026-10-05 → 2026-10-12 (+7d) |  |  | 72d → 66d |  |
| SDR-2-PRO-PO-E-1170 | CCTV Cables "CAT6" PO |  | 2026-10-05 → 2026-10-12 (+7d) |  |  | 27.9d → 21.9d |  |
| SDR-2-PRO-PO-E-1190 | CCTV System,Servers & WorkStations PO |  | 2026-10-05 → 2026-10-12 (+7d) |  |  | 78d → 72d |  |
| SDR-2-PRO-PO-E-1200 | Professional 55" Video wall at control room PO |  | 2026-10-05 → 2026-09-05 A (-30d) |  | 0% → 100% | 51d → none |  |
| SDR-2-PRO-PO-E-1210 | CCTV Switches PO |  | 2026-10-05 → 2026-09-07 A (-28d) |  | 0% → 100% | 78d → none |  |
| SDR-2-PRO-PO-E-1220 | CCTV Wireless P2P bridges PO |  | 2026-10-05 → 2026-09-05 A (-30d) |  | 0% → 100% | 78d → none |  |
| SDR-2-PRO-PO-E-1230 | CCTV UPS PO |  | 2026-10-05 → 2026-09-14 A (-21d) |  | 0% → 100% | 46d → none |  |
| SDR-2-PRO-PO-E-1240 | CCTV Solar System PO |  | 2026-10-05 → 2026-10-12 (+7d) |  |  | 75d → 77d |  |
| SDR-2-PRO-PO-E-1120 | KWH Meter with mounting frame PO |  | 2026-10-05 → 2026-10-12 (+7d) |  |  | 8d → 2d |  |
| SDR-2-PRO-PO-E-1140 | PECD Ducts for CCTV network PO |  | 2026-10-05 → 2026-10-12 (+7d) |  |  | 15d → 12.9d |  |
| SDR-2-PRO-PO-E-1180 | Racks and Patch panels PO |  | 2026-10-05 → 2026-09-15 A (-20d) |  | 0% → 100% | 72d → none |  |
| SDR-2-PRO-PO-E-1130 | Main Feeder Pillar PO |  | 2026-10-05 → 2026-10-12 (+7d) |  |  | 17d → 11d |  |
| 1 | **Delivery to Site** |  | 2027-01-20 → 2027-01-27 (+7d) |  |  |  |  |
| 2 | **Short Lead Items Delivery** |  | 2027-01-20 → 2027-01-27 (+7d) |  |  |  |  |
| 1 | **Civil** |  | 2027-01-20 → 2027-01-27 (+7d) |  |  |  |  |
| SDR-2-PRO-DES-C-1020 | Asphalt Mix Delivery |  | 2026-12-22 → 2026-12-29 (+7d) |  |  | 4.1d → 12.1d |  |
| SDR-2-PRO-DES-C-1030 | Kerbstone Delivery |  | 2026-11-14 → 2026-11-21 (+7d) |  | 0% → 10% | 0d → 2d |  |
| SDR-2-PRO-DES-C-1050 | Interlock Tiles Delivery |  | 2026-10-25 → 2026-11-01 (+7d) |  | 0% → 10% | 87.1d → 97.1d |  |
| SDR-2-PRO-DES-C-1090 | Protection Bollards for CCTV Pole Delivery | 2026-10-06 → 2026-10-13 (+7d) | 2026-10-22 → 2026-10-29 (+7d) |  |  | 110d → 103d |  |
| SDR-2-PRO-DES-C-1100 | Protection (Guard rail) for Fire hydrant Delivery | 2026-10-20 → 2026-10-27 (+7d) | 2026-12-18 → 2026-12-25 (+7d) |  |  | 1d → 12d | SDR-2-PRO-PO-C-1100 FS+12d → SDR-2-PRO-PO-C-1100 FS+6d |
| SDR-2-PRO-DES-C-1040 | Road Marking Delivery | 2026-10-23 → 2026-10-30 (+7d) | 2027-01-20 → 2027-01-27 (+7d) |  |  | 4d → 14d |  |
| SDR-2-PRO-DES-C-1080 | Fence for Electrical works Delivery | 2026-10-25 → 2026-11-15 (+21d) | 2026-11-22 → 2026-12-13 (+21d) |  |  | 49d → 28d |  |
| SDR-2-PRO-DES-C-1060 | Traffic Signage Manufacture and Delivery | 2026-10-30 → 2026-11-20 (+21d) | 2026-11-18 → 2026-12-09 (+21d) |  |  | 15d → 4d |  |
| 3 | **Electrical** |  | 2026-10-07 → 2026-10-14 (+7d) |  |  |  |  |
| SDR-2-PRO-DES-E-1020 | PECD Ducts for CCTV network Delivery |  | 2026-10-07 → 2026-10-14 (+7d) |  |  | 16d → 13d |  |
| 5 | **Long Lead Items Delivery** |  | 2026-12-13 → 2026-12-20 (+7d) |  |  |  |  |
| 3 | **Electrical** |  | 2026-12-13 → 2026-12-20 (+7d) |  |  |  |  |
| SDR-2-PRO-DEL-E-1110 | CCTV Poles including all hardwares Delivery |  | 2026-11-11 → 2026-11-18 (+7d) |  |  | 47.1d → 40.1d |  |

| ID | Task | Start | Finish | Complete | Total float |
| --- | --- | --- | --- | --- | --- |
| SDR-2-PRO-DEL-E-1120 | CCTV Cables "Power" Delivery |  | 2026-11-11 → 2026-11-18 (+7d) |  | 47.1d → 40.1d |
| SDR-2-PRO-DEL-E-1130 | CCTV Cables "CAT6" Delivery |  | 2026-10-22 → 2026-10-29 (+7d) |  | 16d → 9d |
| SDR-2-PRO-DEL-E-1140 | Racks and Patch panels Delivery |  | 2026-10-27 → 2026-10-08 A (-19d) | 0% → 100% | 62.1d → none |
| SDR-2-PRO-DEL-E-1150 | CCTV System,Servers & WorkStations Delivery |  | 2026-10-27 → 2026-11-03 (+7d) |  | 69.1d → 62.1d |
| SDR-2-PRO-DEL-E-1160 | Professional 55" Video wall at control room Delivery |  | 2026-10-27 → 2026-10-06 A (-21d) | 0% → 100% | 37.1d → none |
| SDR-2-PRO-DEL-E-1170 | CCTV Switches Delivery |  | 2026-10-27 → 2026-10-06 A (-21d) | 0% → 100% | 69.1d → none |
| SDR-2-PRO-DEL-E-1180 | CCTV Wireless P2P bridges Delivery |  | 2026-10-27 → 2026-09-16 A (-41d) | 0% → 100% | 69.1d → none |
| SDR-2-PRO-DEL-E-1190 | CCTV UPS Delivery |  | 2026-10-27 → 2026-10-08 A (-19d) | 0% → 100% | 32.1d → none |
| SDR-2-PRO-DEL-E-1200 | CCTV Solar System Delivery |  | 2026-11-01 → 2026-11-08 (+7d) |  | 61.1d → 63.1d |
| SDR-2-PRO-DEL-E-1020 | Street Lighting Poles Delivery | 2026-10-05 → 2026-10-12 (+7d) | 2026-12-13 → 2026-12-20 (+7d) |  | 9d → 2d |
| SDR-2-PRO-DEL-E-1030 | Street Lighting Fixtures Delivery | 2026-10-05 → 2026-10-12 (+7d) | 2026-12-13 → 2026-12-20 (+7d) |  | 9d → 2d |
| SDR-2-PRO-DEL-E-1080 | Lighting Panels Delivery | 2026-10-05 → 2026-10-12 (+7d) | 2026-12-08 → 2026-12-15 (+7d) |  | 20d → 13d |
| SDR-2-PRO-DEL-E-1070 | Unit Substation Delivery | 2026-10-06 → 2026-10-13 (+7d) | 2026-12-09 → 2026-12-16 (+7d) |  | 13d → 6d |
| SDR-2-PRO-DEL-E-1090 | KWH Meter with mounting frame Delivery | 2026-10-06 → 2026-10-13 (+7d) | 2026-11-24 → 2026-12-01 (+7d) |  | 9d → 2d |
| SDR-2-PRO-DEL-E-1100 | Main Feeder Pillar Manufacture and Delivery | 2026-10-20 → 2026-10-27 (+7d) | 2026-12-08 → 2026-12-15 (+7d) |  | 20d → 13d |
| 2 | **Mechanical** |  | 2026-10-05 → 2026-10-12 (+7d) |  |  |
| SDR-2-PRO-DEL-M-1030 | Manhole Delivery |  | 2026-10-05 → 2026-10-12 (+7d) |  | 50d → 61d |
| SDR-2-PRO-DEL-M-1050 | Manhole, Catch basin and Valve box Cover Delivery |  | 2026-10-05 → 2026-10-12 (+7d) |  | 50d → 61d |
| SDR-2-PRO-DEL-M-1060 | Fire Hydrant Delivery |  | 2026-10-05 → 2026-10-12 (+7d) |  | 84d → 77d |
| SDR-2-PRO-DEL-M-1070 | Valve of Fire Hydrant Delivery |  | 2026-10-05 → 2026-10-12 (+7d) |  | 84d → 77d |
| SDR-2-PRO-DEL-M-1020 | Valves Delivery |  | 2026-10-05 → 2026-10-12 (+7d) |  | 59d → 62d |
| SDR-2-PRO-DEL-M-1040 | Catch Basin Delivery |  | 2026-10-05 → 2026-10-12 (+7d) |  | 0d → 2d |
| 4 | **Materials Staging Time** |  | 2027-01-24 → 2027-01-31 (+7d) |  |  |
| 1 | **Civil** |  | 2027-01-24 → 2027-01-31 (+7d) |  |  |
| SDR-2-PRO-ST-C-1050 | Interlock Tiles staging | 2026-10-25 → 2026-09-01 A (-54d) | 2026-10-29 → 2026-11-05 (+7d) | 0% → 10% | 87.1d → 97.1d |
| SDR-2-PRO-ST-C-1030 | Kerbstone staging |  | 2026-11-14 → 2026-11-21 (+7d) | 0% → 10% | 50.1d → 60.1d |
| SDR-2-PRO-ST-C-1090 | Protection Bollards for CCTV Pole staging | 2026-10-27 → 2026-11-03 (+7d) | 2026-10-30 → 2026-11-06 (+7d) |  | 110d → 103d |
| SDR-2-PRO-ST-C-1060 | Traffic Signage staging | 2026-11-19 → 2026-12-10 (+21d) | 2026-11-22 → 2026-12-13 (+21d) |  | 120d → 116d |
| SDR-2-PRO-ST-C-1080 | Fence for Electrical works staging | 2026-11-23 → 2026-12-14 (+21d) | 2026-11-26 → 2026-12-17 (+21d) |  | 49d → 28d |
| SDR-2-PRO-ST-C-1100 | Protection (Guard rail) for Fire hydrant staging | 2026-12-19 → 2026-12-26 (+7d) | 2026-12-22 → 2026-12-29 (+7d) |  | 1d → 12d |
| SDR-2-PRO-ST-C-1020 | Asphalt Mix staging | 2026-12-22 → 2026-12-29 (+7d) | 2026-12-22 → 2026-12-29 (+7d) |  | 4.1d → 14.1d |
| SDR-2-PRO-ST-C-1040 | Road Marking staging | 2027-01-21 → 2027-01-28 (+7d) | 2027-01-24 → 2027-01-31 (+7d) |  | 24d → 35d |
| 2 | **Mechanical** |  | 2026-10-05 → 2026-10-12 (+7d) |  |  |
| SDR-2-PRO-ST-M-1050 | Manhole, Catch basin and Valve box Cover staging |  | 2026-10-05 → 2026-10-12 (+7d) |  | 59d → 62d |
| SDR-2-PRO-ST-M-1030 | Manhole staging |  | 2026-10-05 → 2026-10-12 (+7d) |  | 209d → 202d |
| SDR-2-PRO-ST-M-1020 | Valves staging |  | 2026-10-05 → 2026-10-12 (+7d) |  | 83d → 76d |
| SDR-2-PRO-ST-M-1060 | Fire Hydrant staging |  | 2026-10-05 → 2026-10-12 (+7d) |  | 127d → 120d |
| SDR-2-PRO-ST-M-1070 | Valve of Fire Hydrant staging |  | 2026-10-05 → 2026-10-12 (+7d) |  | 127d → 120d |
| SDR-2-PRO-ST-M-1040 | Catch Basin staging |  | 2026-10-05 → 2026-10-12 (+7d) |  | 124d → 117d |
| 3 | **Electrical** |  | 2026-12-04 → 2026-12-11 (+7d) |  |  |
| SDR-2-PRO-ST-E-1000 | MV Cables staging |  | 2026-10-05 → 2026-09-10 A (-25d) | 0% → 100% | 35d → none |
| SDR-2-PRO-ST-E-1020 | LV Cables staging |  | 2026-10-05 → 2026-09-17 A (-18d) | 0% → 100% | 47d → none |
| SDR-2-PRO-ST-E-1070 | Concrete Manholes & DrawPits for Telecom Network staging |  | 2026-10-05 → 2026-08-24 A (-42d) | 0% → 100% | 59d → none |
| SDR-2-PRO-ST-E-1010 | Termination Kits & Joints staging | 2026-10-05 → 2026-08-24 A (-42d) | 2026-10-14 → 2026-09-14 A (-30d) | 0% → 100% | 26d → none |
| SDR-2-PRO-ST-E-1180 | Racks and Patch panels staging | 2026-10-27 → 2026-08-24 A (-64d) | 2026-11-06 → 2026-10-08 A (-29d) | 0% → 100% | 69.1d → none |
| SDR-2-PRO-ST-E-1200 | Professional 55" Video wall at control room staging | 2026-10-27 → 2026-08-24 A (-64d) | 2026-11-06 → 2026-10-06 A (-31d) | 0% → 100% | 37.1d → none |
| SDR-2-PRO-ST-E-1210 | CCTV Switches staging | 2026-10-27 → 2026-08-24 A (-64d) | 2026-11-06 → 2026-10-06 A (-31d) | 0% → 100% | 69.1d → none |
| SDR-2-PRO-ST-E-1220 | CCTV Wireless P2P bridges staging | 2026-10-27 → 2026-08-24 A (-64d) | 2026-11-06 → 2026-09-16 A (-51d) | 0% → 100% | 69.1d → none |
| SDR-2-PRO-ST-E-1230 | CCTV UPS staging | 2026-10-27 → 2026-08-24 A (-64d) | 2026-11-06 → 2026-10-08 A (-29d) | 0% → 100% | 69.1d → none |
| SDR-2-PRO-ST-E-1030 | Street Lighting Poles staging | 2026-10-05 → 2026-10-12 (+7d) | 2026-10-14 → 2026-10-21 (+7d) |  | 38d → 31d |
| SDR-2-PRO-ST-E-1040 | Street Lighting Fixtures staging | 2026-10-05 → 2026-10-12 (+7d) | 2026-10-14 → 2026-10-21 (+7d) |  | 38d → 31d |
| SDR-2-PRO-ST-E-1110 | Lighting Panels staging | 2026-10-05 → 2026-10-12 (+7d) | 2026-10-14 → 2026-10-21 (+7d) |  | 59d → 52d |
| SDR-2-PRO-ST-E-1100 | Unit Substation staging | 2026-10-06 → 2026-10-13 (+7d) | 2026-10-15 → 2026-10-22 (+7d) |  | 60d → 53d |
| SDR-2-PRO-ST-E-1140 | PECD Ducts for CCTV network staging | 2026-10-07 → 2026-10-14 (+7d) | 2026-10-17 → 2026-10-24 (+7d) |  | 72.1d → 65.1d |
| SDR-2-PRO-ST-E-1130 | Main Feeder Pillar staging | 2026-10-22 → 2026-10-29 (+7d) | 2026-10-31 → 2026-11-07 (+7d) |  | 42d → 35d |
| SDR-2-PRO-ST-E-1170 | CCTV Cables "CAT6" staging | 2026-10-22 → 2026-10-29 (+7d) | 2026-11-01 → 2026-11-08 (+7d) |  | 57.1d → 50.1d |
| SDR-2-PRO-ST-E-1190 | CCTV System,Servers & WorkStations staging | 2026-10-27 → 2026-11-03 (+7d) | 2026-11-06 → 2026-11-13 (+7d) |  | 69.1d → 62.1d |
| SDR-2-PRO-ST-E-1240 | CCTV Solar System staging | 2026-11-01 → 2026-11-08 (+7d) | 2026-11-11 → 2026-11-18 (+7d) |  | 77.1d → 70.1d |
| SDR-2-PRO-ST-E-1150 | CCTV Poles including all hardwares staging | 2026-11-11 → 2026-11-18 (+7d) | 2026-11-21 → 2026-11-28 (+7d) |  | 54.1d → 47.1d |
| SDR-2-PRO-ST-E-1160 | CCTV Cables "Power" staging | 2026-11-11 → 2026-11-18 (+7d) | 2026-11-21 → 2026-11-28 (+7d) |  | 54.1d → 47.1d |
| SDR-2-PRO-ST-E-1120 | KWH Meter with mounting frame staging | 2026-11-25 → 2026-12-02 (+7d) | 2026-12-04 → 2026-12-11 (+7d) |  | 9d → 2d |
| RO | **ROAD WORKS** |  | 2027-04-19 → 2027-04-26 (+7d) |  |  |
| ZA | **ZONE A** |  | 2027-04-19 → 2027-04-26 (+7d) |  |  |
| 1 | **ROAD WORKS IN ( PH2-COL-MC10 )** |  | 2027-04-17 → 2027-04-24 (+7d) |  |  |
| 8 | **Demolition Work** | 2026-10-05 → 2026-10-12 (+7d) | 2026-10-18 → 2026-10-25 (+7d) |  |  |
| SDR-2-CON-RW-ZA-1080 | Milling of wearing course | 2026-10-05 → 2026-10-12 (+7d) | 2026-10-18 → 2026-10-25 (+7d) |  | 59d → 68d |
| 3 | **Asphalt Works** | 2026-12-22 → 2026-12-29 (+7d) | 2027-01-27 → 2027-02-03 (+7d) |  |  |
| SDR-2-CON-RW-ZA-1090 | Asphalt works 2st Layer with RC-01 | 2026-12-22 → 2026-12-29 (+7d) | 2027-01-10 → 2027-01-17 (+7d) |  | 3.1d → 12.1d |
| SDR-2-CON-RW-ZA-1100 | Asphalt works 3nd layer with RC-02 | 2027-01-03 → 2027-01-10 (+7d) | 2027-01-27 → 2027-02-03 (+7d) |  | 3.1d → 12.1d |
| 4 | **Kerbstone Installation** | 2026-11-14 → 2026-11-21 (+7d) | 2027-02-14 → 2027-02-21 (+7d) |  |  |

| ID | Task | Start | Finish | Complete | Total float |
| --- | --- | --- | --- | --- | --- |
| SDR-2-CON-RW-ZA-3400 | Kerbstone Installation "all Types" Part1 | 2026-11-14 → 2026-11-21 (+7d) | 2026-12-05 → 2026-12-12 (+7d) |  | 43.1d → 52.1d |
| SDR-2-CON-RW-ZA-1110 | Kerbstone Installation "all Types" Part2 | 2027-01-20 → 2027-01-27 (+7d) | 2027-02-14 → 2027-02-21 (+7d) |  | 3.1d → 12.1d |
| 5 | **Interlock Installation** | 2027-01-21 → 2027-01-28 (+7d) | 2027-02-14 → 2027-02-21 (+7d) |  |  |
| SDR-2-CON-RW-ZA-1120 | Interlock Installation | 2027-01-21 → 2027-01-28 (+7d) | 2027-02-14 → 2027-02-21 (+7d) |  | 3d → 12d |
| 6 | **Road Marking** | 2027-02-15 → 2027-02-23 (+8d) | 2027-03-24 → 2027-03-31 (+7d) |  |  |
| SDR-2-CON-RW-ZA-1130 | Retroreflective Thermoplastic White Traffic lines | 2027-02-15 → 2027-02-23 (+8d) | 2027-03-03 → 2027-03-15 (+12d) |  | 3d → 12d |
| SDR-2-CON-RW-ZA-1140 | Retroreflective Thermoplastic Yellow, Traffic lines | 2027-03-04 → 2027-03-16 (+12d) | 2027-03-24 → 2027-03-31 (+7d) |  | 3d → 12d |
| 7 | **Traffic Signage** | 2027-03-25 → 2027-04-01 (+7d) | 2027-04-17 → 2027-04-24 (+7d) |  |  |
| SDR-2-CON-RW-ZA-1150 | Single post-Traffic signs Installation | 2027-03-25 → 2027-04-01 (+7d) | 2027-04-17 → 2027-04-24 (+7d) |  | 3d → 12d |
| 8 | **ROAD WORKS IN ( PH2-COL-MC20 )** |  | 2027-04-19 → 2027-04-26 (+7d) |  |  |
| 2 | **Base Course** |  | 2026-10-26 → 2026-11-02 (+7d) |  |  |
| SDR-2-CON-RW-ZA-1210 | Aggregate base course layer |  | 2026-10-26 → 2026-11-02 (+7d) | 70% → 90% | 16d → 25d |
| 8 | **Demolition Work** | 2026-10-27 → 2026-11-03 (+7d) | 2026-11-02 → 2026-11-09 (+7d) |  |  |
| SDR-2-CON-RW-ZA-1220 | Milling of wearing course | 2026-10-27 → 2026-11-03 (+7d) | 2026-11-02 → 2026-11-09 (+7d) |  | 16d → 25d |
| 3 | **Asphalt Works** | 2026-11-03 → 2026-11-10 (+7d) | 2026-12-26 → 2027-01-02 (+7d) |  |  |
| SDR-2-CON-RW-ZA-1230 | Asphalt works 1st Layer with MC-01 | 2026-11-03 → 2026-11-10 (+7d) | 2026-11-12 → 2026-11-19 (+7d) |  | 16d → 25d |
| SDR-2-CON-RW-ZA-1240 | Asphalt works 2nd layer with RC-01 | 2026-11-14 → 2026-11-21 (+7d) | 2026-12-03 → 2026-12-10 (+7d) |  | 16d → 25d |
| SDR-2-CON-RW-ZA-2840 | Asphalt Works 3 rd Layer with RC-02 | 2026-12-05 → 2026-12-12 (+7d) | 2026-12-26 → 2027-01-02 (+7d) |  | 16d → 25d |
| 4 | **Kerbstone Installation** | 2026-12-23 → 2026-12-30 (+7d) | 2027-02-06 → 2027-02-13 (+7d) |  |  |
| SDR-2-CON-RW-ZA-3410 | Kerbstone Installation "all Types" Part 1 | 2026-12-23 → 2026-12-30 (+7d) | 2027-01-12 → 2027-01-19 (+7d) |  | 1d → 10d |
| SDR-2-CON-RW-ZA-1250 | Kerbstone Installation "all Types" Part 2 | 2027-01-13 → 2027-01-20 (+7d) | 2027-02-06 → 2027-02-13 (+7d) |  | 1d → 10d |
| 5 | **Interlock Installation** | 2027-02-07 → 2027-02-14 (+7d) | 2027-03-03 → 2027-03-15 (+12d) |  |  |
| SDR-2-CON-RW-ZA-1260 | Interlock Installation | 2027-02-07 → 2027-02-14 (+7d) | 2027-03-03 → 2027-03-15 (+12d) |  | 1d → 10d |
| 6 | **Road Marking** | 2027-03-04 → 2027-03-16 (+12d) | 2027-03-29 → 2027-04-05 (+7d) |  |  |
| SDR-2-CON-RW-ZA-1270 | Retroreflective Thermoplastic White Traffic lines | 2027-03-04 → 2027-03-16 (+12d) | 2027-03-21 → 2027-03-28 (+7d) |  | 1d → 10d |
| SDR-2-CON-RW-ZA-1280 | Retroreflective Thermoplastic Yellow, Traffic lines | 2027-03-22 → 2027-03-29 (+7d) | 2027-03-29 → 2027-04-05 (+7d) |  | 1d → 10d |
| 7 | **Traffic Signage** | 2027-03-30 → 2027-04-06 (+7d) | 2027-04-19 → 2027-04-26 (+7d) |  |  |
| SDR-2-CON-RW-ZA-1290 | Single post-Traffic signs Installation | 2027-03-30 → 2027-04-06 (+7d) | 2027-04-19 → 2027-04-26 (+7d) |  | 1d → 10d |
| 13 | **ROAD WORKS IN ( PH2-A-MCI0 )** |  | 2027-04-15 → 2027-04-22 (+7d) |  |  |
| 11 | **Subgrade** |  | 2026-10-27 → 2026-11-03 (+7d) |  |  |
| SDR-2-CON-RW-ZA-1320 | Subgrade layer works |  | 2026-10-27 → 2026-11-03 (+7d) |  | 4d → 9d |
| 2 | **Base Course** | 2026-10-28 → 2026-11-04 (+7d) | 2026-11-19 → 2026-11-26 (+7d) |  |  |
| SDR-2-CON-RW-ZA-1350 | Aggregate base course layer | 2026-10-28 → 2026-11-04 (+7d) | 2026-11-19 → 2026-11-26 (+7d) |  | 4d → 9d |
| 8 | **Demolition Work** | 2026-11-21 → 2026-11-28 (+7d) | 2026-11-25 → 2026-12-02 (+7d) |  |  |
| SDR-2-CON-RW-ZA-1360 | Milling of wearing course | 2026-11-21 → 2026-11-28 (+7d) | 2026-11-25 → 2026-12-02 (+7d) |  | 4d → 9d |
| 3 | **Asphalt Works** | 2026-11-26 → 2026-12-03 (+7d) | 2026-12-26 → 2027-01-02 (+7d) |  |  |
| SDR-2-CON-RW-ZA-1370 | Asphalt works 1st Layer with MC-01 | 2026-11-26 → 2026-12-03 (+7d) | 2026-12-01 → 2026-12-08 (+7d) |  | 4d → 9d |
| SDR-2-CON-RW-ZA-1380 | Asphalt works 2nd layer with RC-02 | 2026-12-02 → 2026-12-09 (+7d) | 2026-12-26 → 2027-01-02 (+7d) |  | 4d → 9d |
| 4 | **Kerbstone Installation** |  | 2027-01-19 → 2027-01-26 (+7d) |  |  |
| SDR-2-CON-RW-ZA-1390 | Kerbstone Installation "all Types" Part 2 | 2026-12-27 → 2027-01-03 (+7d) | 2027-01-19 → 2027-01-26 (+7d) |  | 4d → 9d |
| 5 | **Interlock Installation** | 2027-01-20 → 2027-01-27 (+7d) | 2027-02-13 → 2027-02-20 (+7d) |  |  |
| SDR-2-CON-RW-ZA-1400 | Interlock Installation | 2027-01-20 → 2027-01-27 (+7d) | 2027-02-13 → 2027-02-20 (+7d) |  | 4d → 9d |
| 6 | **Road Marking** | 2027-02-14 → 2027-02-21 (+7d) | 2027-03-23 → 2027-03-30 (+7d) |  |  |
| SDR-2-CON-RW-ZA-1410 | Retroreflective Thermoplastic White Traffic lines | 2027-02-14 → 2027-02-21 (+7d) | 2027-03-02 → 2027-03-14 (+12d) |  | 4d → 9d |
| SDR-2-CON-RW-ZA-1420 | Retroreflective Thermoplastic Yellow, Traffic lines | 2027-03-03 → 2027-03-15 (+12d) | 2027-03-23 → 2027-03-30 (+7d) |  | 4d → 9d |
| 7 | **Traffic Signage** | 2027-03-24 → 2027-03-31 (+7d) | 2027-04-15 → 2027-04-22 (+7d) |  |  |
| SDR-2-CON-RW-ZA-1430 | Single post-Traffic signs Installation | 2027-03-24 → 2027-03-31 (+7d) | 2027-04-15 → 2027-04-22 (+7d) |  | 4d → 9d |
| 11 | **Subgrade** |  | 2026-10-08 → 2026-10-15 (+7d) |  |  |
| SDR-2-CON-RW-ZA-1460 | Subgrade layer works |  | 2026-10-08 → 2026-10-15 (+7d) |  | 13d → 22d |
| 9 | **Earth Works Plot** |  | 2026-11-02 → 2026-11-09 (+7d) |  |  |
| SDR-2-CON-RW-ZA-1480 | Embankments to the Plot 2 Layer |  | 2026-10-05 → 2026-10-12 (+7d) |  | 76d → 70d |
| SDR-2-CON-RW-ZA-1470 | Plot Excavation for cuttings (all types of soil) |  | 2026-11-02 → 2026-11-09 (+7d) |  | 37d → 31d |
| 2 | **Base Course** | 2026-10-10 → 2026-10-17 (+7d) | 2026-10-26 → 2026-11-02 (+7d) |  |  |
| SDR-2-CON-RW-ZA-1490 | Aggregate base course layer | 2026-10-10 → 2026-10-17 (+7d) | 2026-10-26 → 2026-11-02 (+7d) |  | 13d → 22d |
| 4 | **Kerbstone Installation** | 2026-10-10 → 2026-10-17 (+7d) |  |  |  |
| SDR-2-CON-RW-ZA-3440 | Kerbstone Installation "all Types" Part 1 | 2026-10-10 → 2026-10-17 (+7d) | 2026-11-02 → 2026-11-09 (+7d) |  | 49d → 58d |
| 3 | **ROAD WORKS IN ( PH2-A-MCB0 )** |  | 2027-03-30 → 2027-04-06 (+7d) |  |  |
| 11 | **Subgrade** |  | 2026-10-05 → 2026-10-12 (+7d) |  |  |
| SDR-2-CON-RW-ZA-1600 | Subgrade layer works |  | 2026-10-05 → 2026-10-12 (+7d) |  | 20d → 14d |
| 9 | **Earth Works Plot** |  | 2026-10-05 → 2026-10-12 (+7d) |  |  |
| SDR-2-CON-RW-ZA-1610 | Plot Excavation for cuttings (all types of soil) |  | 2026-10-05 → 2026-10-12 (+7d) |  | 43d → 37d |
| SDR-2-CON-RW-ZA-1620 | Embankments to the Plot 2 Layer |  | 2026-10-05 → 2026-10-12 (+7d) |  | 146d → 140d |
| 8 | **Demolition Work** | 2026-10-29 → 2026-11-05 (+7d) | 2026-11-01 → 2026-11-08 (+7d) |  |  |
| SDR-2-CON-RW-ZA-1640 | Milling of wearing course | 2026-10-29 → 2026-11-05 (+7d) | 2026-11-01 → 2026-11-08 (+7d) |  | 20d → 14d |
| 2 | **Base Course** | 2026-10-06 → 2026-10-13 (+7d) | 2026-10-28 → 2026-11-04 (+7d) |  |  |
| SDR-2-CON-RW-ZA-1630 | Aggregate base course layer | 2026-10-06 → 2026-10-13 (+7d) | 2026-10-28 → 2026-11-04 (+7d) |  | 20d → 14d |
| 3 | **Asphalt Works** | 2026-11-02 → 2026-11-09 (+7d) | 2026-12-09 → 2026-12-16 (+7d) |  |  |
| SDR-2-CON-RW-ZA-1650 | Asphalt works 1st Layer with MC-01 | 2026-11-02 → 2026-11-09 (+7d) | 2026-11-25 → 2026-12-02 (+7d) |  | 20d → 14d |
| SDR-2-CON-RW-ZA-1660 | Asphalt works 2nd layer with RC-02 | 2026-11-26 → 2026-12-03 (+7d) | 2026-12-09 → 2026-12-16 (+7d) |  | 20d → 14d |
| 4 | **Kerbstone Installation** | 2026-10-06 → 2026-10-13 (+7d) | 2027-01-02 → 2027-01-09 (+7d) |  |  |

| ID | Task | Start | Finish | Complete | Total float |
| --- | --- | --- | --- | --- | --- |
| SDR-2-CON-RW-ZA-3430 | Kerbstone Installation "all Types" Part 1 | 2026-10-06 → 2026-10-13 (+7d) | 2026-10-28 → 2026-11-04 (+7d) |  | 45d → 50d |
| SDR-2-CON-RW-ZA-1670 | Kerbstone Installation "all Types" Part 2 | 2026-12-10 → 2026-12-17 (+7d) | 2027-01-02 → 2027-01-09 (+7d) |  | 20d → 14d |
| 5 | **Interlock Installation** | 2027-01-03 → 2027-01-10 (+7d) | 2027-01-26 → 2027-02-02 (+7d) |  |  |
| SDR-2-CON-RW-ZA-1680 | Interlock Installation | 2027-01-03 → 2027-01-10 (+7d) | 2027-01-26 → 2027-02-02 (+7d) |  | 20d → 14d |
| 6 | **Road Marking** | 2027-01-27 → 2027-02-03 (+7d) | 2027-03-02 → 2027-03-14 (+12d) |  |  |
| SDR-2-CON-RW-ZA-1690 | Retroreflective Thermoplastic White Traffic lines | 2027-01-27 → 2027-02-03 (+7d) | 2027-02-13 → 2027-02-20 (+7d) |  | 20d → 14d |
| SDR-2-CON-RW-ZA-1700 | Retroreflective Thermoplastic Yellow, Traffic lines | 2027-02-14 → 2027-02-21 (+7d) | 2027-03-02 → 2027-03-14 (+12d) |  | 20d → 14d |
| 7 | **Traffic Signage** | 2027-03-03 → 2027-03-15 (+12d) | 2027-03-30 → 2027-04-06 (+7d) |  |  |
| SDR-2-CON-RW-ZA-1710 | Single post-Traffic signs Installation | 2027-03-03 → 2027-03-15 (+12d) | 2027-03-30 → 2027-04-06 (+7d) |  | 20d → 14d |
| 7 | **ROAD WORKS IN ( PH2-A-MCC0 )** |  | 2027-04-07 → 2027-04-14 (+7d) |  |  |
| SDR-2-CON-RW-ZA-1750 | Plot Excavation for cuttings (all types of soil) |  | 2026-10-27 → 2026-10-12 (-15d) | 80% → 85% | 34.1d → 62d |
| SDR-2-CON-RW-ZA-1760 | Embankments to the Plot 2 Layer |  | 2026-10-28 → 2026-10-13 (-15d) |  | 104.1d → 117d |
| 2 | **Base Course** |  | 2026-10-07 → 2026-10-14 (+7d) |  |  |
| SDR-2-CON-RW-ZA-1770 | Aggregate base course layer |  | 2026-10-07 → 2026-10-14 (+7d) | 90% → 95% | 43d → 52d |
| 8 | **Demolition Work** | 2026-10-08 → 2026-10-15 (+7d) | 2026-10-11 → 2026-10-18 (+7d) |  |  |
| SDR-2-CON-RW-ZA-1780 | Milling of wearing course | 2026-10-08 → 2026-10-15 (+7d) | 2026-10-11 → 2026-10-18 (+7d) |  | 43d → 52d |
| 3 | **Asphalt Works** | 2026-11-18 → 2026-11-25 (+7d) | 2026-12-19 → 2026-12-26 (+7d) |  |  |
| SDR-2-CON-RW-ZA-1790 | Asphalt works 1st Layer with MC-01 | 2026-11-18 → 2026-11-25 (+7d) | 2026-12-06 → 2026-12-13 (+7d) |  | 11d → 20d |
| SDR-2-CON-RW-ZA-1800 | Asphalt works 2nd layer with RC-02 | 2026-12-07 → 2026-12-14 (+7d) | 2026-12-19 → 2026-12-26 (+7d) |  | 11d → 20d |
| 4 | **Kerbstone Installation** | 2026-10-05 → 2026-10-12 (+7d) | 2027-01-11 → 2027-01-18 (+7d) |  |  |
| SDR-2-CON-RW-ZA-3450 | Kerbstone Installation "all Types" Part 1 | 2026-10-05 → 2026-10-12 (+7d) | 2026-10-25 → 2026-11-01 (+7d) |  | 59d → 68d |
| SDR-2-CON-RW-ZA-1810 | Kerbstone Installation "all Types" Part 2 | 2026-12-20 → 2026-12-27 (+7d) | 2027-01-11 → 2027-01-18 (+7d) |  | 11d → 20d |
| 5 | **Interlock Installation** | 2027-01-12 → 2027-01-19 (+7d) | 2027-02-04 → 2027-02-11 (+7d) |  |  |
| SDR-2-CON-RW-ZA-1820 | Interlock Installation | 2027-01-12 → 2027-01-19 (+7d) | 2027-02-04 → 2027-02-11 (+7d) |  | 11d → 20d |
| 6 | **Road Marking** | 2027-02-06 → 2027-02-13 (+7d) | 2027-03-15 → 2027-03-22 (+7d) |  |  |
| SDR-2-CON-RW-ZA-1830 | Retroreflective Thermoplastic White Traffic lines | 2027-02-06 → 2027-02-13 (+7d) | 2027-02-21 → 2027-03-01 (+8d) |  | 11d → 20d |
| SDR-2-CON-RW-ZA-1840 | Retroreflective Thermoplastic Yellow, Traffic lines | 2027-02-23 → 2027-03-02 (+7d) | 2027-03-15 → 2027-03-22 (+7d) |  | 11d → 20d |
| 7 | **Traffic Signage** | 2027-03-16 → 2027-03-23 (+7d) | 2027-04-07 → 2027-04-14 (+7d) |  |  |
| SDR-2-CON-RW-ZA-1850 | Single post-Traffic signs Installation | 2027-03-16 → 2027-03-23 (+7d) | 2027-04-07 → 2027-04-14 (+7d) |  | 11d → 20d |
| 4 | **ROAD WORKS IN ( PH2-A-MCD0 )** |  | 2027-04-10 → 2027-04-17 (+7d) |  |  |
| 9 | **Earth Works Plot** |  | 2026-10-05 → 2026-10-12 (+7d) |  |  |
| SDR-2-CON-RW-ZA-1890 | Plot Excavation for cuttings (all types of soil) |  | 2026-10-05 → 2026-10-12 (+7d) | 50% → 75% | 48d → 57d |
| SDR-2-CON-RW-ZA-1900 | Embankments to the Plot 2 Layer |  | 2026-10-05 → 2026-10-12 (+7d) | 50% → 75% | 111d → 105d |
| 2 | **Base Course** |  | 2026-10-05 → 2026-10-12 (+7d) |  |  |
| SDR-2-CON-RW-ZA-1910 | Aggregate base course layer |  | 2026-10-05 → 2026-10-12 (+7d) | 90% → 95% | 52d → 61d |
| 8 | **Demolition Work** | 2026-10-26 → 2026-10-13 (-13d) | 2026-11-02 → 2026-10-19 (-14d) |  |  |
| SDR-2-CON-RW-ZA-1920 | Milling of wearing course | 2026-10-26 → 2026-10-13 (-13d) | 2026-11-02 → 2026-10-19 (-14d) |  | 34.1d → 61d |
| 3 | **Asphalt Works** | 2026-12-02 → 2026-12-09 (+7d) | 2026-12-20 → 2026-12-27 (+7d) |  |  |
| SDR-2-CON-RW-ZA-1930 | Asphalt works 1st Layer with MC-01 | 2026-12-02 → 2026-12-09 (+7d) | 2026-12-12 → 2026-12-19 (+7d) |  | 9d → 18d |
| SDR-2-CON-RW-ZA-1940 | Asphalt works 2nd layer with RC-02 | 2026-12-13 → 2026-12-20 (+7d) | 2026-12-20 → 2026-12-27 (+7d) |  | 9d → 18d |
| 4 | **Kerbstone Installation** | 2026-10-05 → 2026-10-12 (+7d) | 2027-01-13 → 2027-01-20 (+7d) |  |  |
| SDR-2-CON-RW-ZA-3460 | Kerbstone Installation "all Types" Part 1 | 2026-10-05 → 2026-10-12 (+7d) | 2026-10-25 → 2026-11-01 (+7d) |  | 57d → 66d |
| SDR-2-CON-RW-ZA-1950 | Kerbstone Installation "all Types" Part 2 | 2026-12-21 → 2026-12-28 (+7d) | 2027-01-13 → 2027-01-20 (+7d) |  | 9d → 18d |
| 5 | **Interlock Installation** | 2027-01-14 → 2027-01-21 (+7d) | 2027-02-07 → 2027-02-14 (+7d) |  |  |
| SDR-2-CON-RW-ZA-1960 | Interlock Installation | 2027-01-14 → 2027-01-21 (+7d) | 2027-02-07 → 2027-02-14 (+7d) |  | 9d → 18d |
| 6 | **Road Marking** | 2027-02-08 → 2027-02-15 (+7d) | 2027-03-17 → 2027-03-24 (+7d) |  |  |
| SDR-2-CON-RW-ZA-1970 | Retroreflective Thermoplastic White Traffic lines | 2027-02-08 → 2027-02-15 (+7d) | 2027-02-24 → 2027-03-03 (+7d) |  | 9d → 18d |
| SDR-2-CON-RW-ZA-1980 | Retroreflective Thermoplastic Yellow, Traffic lines | 2027-02-25 → 2027-03-04 (+7d) | 2027-03-17 → 2027-03-24 (+7d) |  | 9d → 18d |
| 7 | **Traffic Signage** | 2027-03-18 → 2027-03-25 (+7d) | 2027-04-10 → 2027-04-17 (+7d) |  |  |
| SDR-2-CON-RW-ZA-1990 | Single post-Traffic signs Installation | 2027-03-18 → 2027-03-25 (+7d) | 2027-04-10 → 2027-04-17 (+7d) |  | 9d → 18d |
| 5 | **ROAD WORKS IN ( PH2-A-MCE0 )** |  | 2027-03-25 → 2027-04-01 (+7d) |  |  |
| 11 | **Subgrade** |  | 2026-10-27 → 2026-11-03 (+7d) |  |  |
| SDR-2-CON-RW-ZA-2020 | Subgrade layer works |  | 2026-10-27 → 2026-11-03 (+7d) |  | 11d → 20d |
| 9 | **Earth Works Plot** |  | 2026-10-28 → 2026-11-03 (+6d) |  |  |
| SDR-2-CON-RW-ZA-3190 | Embankments to the Plot 1 Layer |  | 2026-10-27 → 2026-11-03 (+7d) | 50% → 75% | 72d → 78d |
| SDR-2-CON-RW-ZA-2030 | Plot Excavation for cuttings (all types of soil) |  | 2026-10-27 → 2026-11-03 (+7d) | 25% → 50% | 36d → 45d |
| SDR-2-CON-RW-ZA-2040 | Embankments to the Plot 2 Layer |  | 2026-10-28 → 2026-11-03 (+6d) |  | 71.1d → 78d |
| 2 | **Base Course** | 2026-10-28 → 2026-11-04 (+7d) | 2026-11-05 → 2026-11-12 (+7d) |  |  |
| SDR-2-CON-RW-ZA-2050 | Aggregate base course layer | 2026-10-28 → 2026-11-04 (+7d) | 2026-11-05 → 2026-11-12 (+7d) |  | 22d → 31d |
| 8 | **Demolition Work** | 2026-11-07 → 2026-11-14 (+7d) | 2026-11-08 → 2026-11-15 (+7d) |  |  |
| SDR-2-CON-RW-ZA-2060 | Milling of wearing course | 2026-11-07 → 2026-11-14 (+7d) | 2026-11-08 → 2026-11-15 (+7d) |  | 22d → 31d |
| 3 | **Asphalt Works** | 2026-11-09 → 2026-11-16 (+7d) | 2026-12-05 → 2026-12-12 (+7d) |  |  |
| SDR-2-CON-RW-ZA-2070 | Asphalt works 1st Layer with MC-01 | 2026-11-09 → 2026-11-16 (+7d) | 2026-11-19 → 2026-11-26 (+7d) |  | 22d → 31d |
| SDR-2-CON-RW-ZA-2080 | Asphalt works 2nd layer with RC-02 | 2026-11-21 → 2026-11-28 (+7d) | 2026-12-05 → 2026-12-12 (+7d) |  | 22d → 31d |
| 4 | **Kerbstone Installation** | 2026-10-28 → 2026-11-04 (+7d) | 2026-12-29 → 2027-01-05 (+7d) |  |  |
| SDR-2-CON-RW-ZA-3470 | Kerbstone Installation "all Types" Part 1 | 2026-10-28 → 2026-11-04 (+7d) | 2026-11-17 → 2026-11-24 (+7d) |  | 11d → 20d |
| SDR-2-CON-RW-ZA-2090 | Kerbstone Installation "all Types" Part 2 | 2026-12-06 → 2026-12-13 (+7d) | 2026-12-29 → 2027-01-05 (+7d) |  | 22d → 31d |
| 5 | **Interlock Installation** | 2026-12-30 → 2027-01-06 (+7d) | 2027-01-23 → 2027-01-30 (+7d) |  |  |
| SDR-2-CON-RW-ZA-2100 | Interlock Installation | 2026-12-30 → 2027-01-06 (+7d) | 2027-01-23 → 2027-01-30 (+7d) |  | 22d → 31d |
| 6 | **Road Marking** | 2027-01-24 → 2027-01-31 (+7d) | 2027-02-25 → 2027-03-04 (+7d) |  |  |

| ID | Task | Start | Finish | Complete | Total float |
| --- | --- | --- | --- | --- | --- |
| SDR-2-CON-RW-ZA-2110 | Retroreflective Thermoplastic White Traffic lines | 2027-01-24 → 2027-01-31 (+7d) | 2027-02-08 → 2027-02-15 (+7d) |  | 22d → 31d |
| SDR-2-CON-RW-ZA-2120 | Retroreflective Thermoplastic Yellow, Traffic lines | 2027-02-09 → 2027-02-16 (+7d) | 2027-02-25 → 2027-03-04 (+7d) |  | 22d → 31d |
| 7 | **Traffic Signage** | 2027-02-27 → 2027-03-06 (+7d) | 2027-03-25 → 2027-04-01 (+7d) |  |  |
| SDR-2-CON-RW-ZA-2130 | Single post-Traffic signs Installation | 2027-02-27 → 2027-03-06 (+7d) | 2027-03-25 → 2027-04-01 (+7d) |  | 22d → 31d |
| 6 | **ROAD WORKS IN ( PH2-A-MCF0 )** |  | 2027-03-27 → 2027-04-03 (+7d) |  |  |
| 11 | **Subgrade** |  | 2026-10-27 → 2026-11-03 (+7d) |  |  |
| SDR-2-CON-RW-ZA-2160 | Subgrade layer works |  | 2026-10-27 → 2026-11-03 (+7d) |  | 21d → 30d |
| 2 | **Base Course** | 2026-10-28 → 2026-11-04 (+7d) | 2026-11-10 → 2026-11-17 (+7d) |  |  |
| SDR-2-CON-RW-ZA-2190 | Aggregate base course layer | 2026-10-28 → 2026-11-04 (+7d) | 2026-11-10 → 2026-11-17 (+7d) |  | 21d → 30d |
| 8 | **Demolition Work** | 2026-11-11 → 2026-11-18 (+7d) | 2026-11-12 → 2026-11-19 (+7d) |  |  |
| SDR-2-CON-RW-ZA-2200 | Milling of wearing course | 2026-11-11 → 2026-11-18 (+7d) | 2026-11-12 → 2026-11-19 (+7d) |  | 21d → 30d |
| 3 | **Asphalt Works** | 2026-11-14 → 2026-11-21 (+7d) | 2026-12-06 → 2026-12-13 (+7d) |  |  |
| SDR-2-CON-RW-ZA-2210 | Asphalt works 1st Layer with MC-01 | 2026-11-14 → 2026-11-21 (+7d) | 2026-11-22 → 2026-11-29 (+7d) |  | 21d → 30d |
| SDR-2-CON-RW-ZA-2220 | Asphalt works 2nd layer with RC-02 | 2026-11-23 → 2026-11-30 (+7d) | 2026-12-06 → 2026-12-13 (+7d) |  | 21d → 30d |
| 4 | **Kerbstone Installation** | 2026-10-28 → 2026-11-04 (+7d) | 2026-12-30 → 2027-01-06 (+7d) |  |  |
| SDR-2-CON-RW-ZA-3480 | Kerbstone Installation "all Types" Part 1 | 2026-10-28 → 2026-11-04 (+7d) | 2026-11-17 → 2026-11-24 (+7d) |  | 21d → 30d |
| SDR-2-CON-RW-ZA-2230 | Kerbstone Installation "all Types" Part 2 | 2026-12-07 → 2026-12-14 (+7d) | 2026-12-30 → 2027-01-06 (+7d) |  | 21d → 30d |
| 5 | **Interlock Installation** | 2026-12-31 → 2027-01-07 (+7d) | 2027-01-24 → 2027-01-31 (+7d) |  |  |
| SDR-2-CON-RW-ZA-2240 | Interlock Installation | 2026-12-31 → 2027-01-07 (+7d) | 2027-01-24 → 2027-01-31 (+7d) |  | 21d → 30d |
| 6 | **Road Marking** | 2027-01-25 → 2027-02-01 (+7d) | 2027-02-27 → 2027-03-06 (+7d) |  |  |
| SDR-2-CON-RW-ZA-2250 | Retroreflective Thermoplastic White Traffic lines | 2027-01-25 → 2027-02-01 (+7d) | 2027-02-09 → 2027-02-16 (+7d) |  | 21d → 30d |
| SDR-2-CON-RW-ZA-2260 | Retroreflective Thermoplastic Yellow, Traffic lines | 2027-02-10 → 2027-02-17 (+7d) | 2027-02-27 → 2027-03-06 (+7d) |  | 21d → 30d |
| 7 | **Traffic Signage** | 2027-02-28 → 2027-03-07 (+7d) | 2027-03-27 → 2027-04-03 (+7d) |  |  |
| SDR-2-CON-RW-ZA-2270 | Single post-Traffic signs Installation | 2027-02-28 → 2027-03-07 (+7d) | 2027-03-27 → 2027-04-03 (+7d) |  | 21d → 30d |
| 9 | **ROAD WORKS IN ( PH2-A-MCG0 )** |  | 2027-03-07 → 2027-03-18 (+11d) |  |  |
| 11 | **Subgrade** |  | 2026-10-25 → 2026-11-01 (+7d) |  |  |
| SDR-2-CON-RW-ZA-2300 | Subgrade layer works |  | 2026-10-25 → 2026-11-01 (+7d) |  | 27d → 21d |
| 9 | **Earth Works Plot** |  | 2026-10-27 → 2026-11-03 (+7d) |  |  |
| SDR-2-CON-RW-ZA-2310 | Plot Excavation for cuttings (all types of soil) |  | 2026-10-25 → 2026-11-01 (+7d) | 70% → 75% | 60d → 54d |
| SDR-2-CON-RW-ZA-2320 | Embankments to the Plot 2 Layer |  | 2026-10-27 → 2026-11-03 (+7d) | 70% → 75% | 126d → 120d |
| 2 | **Base Course** | 2026-10-26 → 2026-11-02 (+7d) | 2026-11-02 → 2026-11-09 (+7d) |  |  |
| SDR-2-CON-RW-ZA-2330 | Aggregate base course layer | 2026-10-26 → 2026-11-02 (+7d) | 2026-11-02 → 2026-11-09 (+7d) |  | 33d → 27d |
| 8 | **Demolition Work** | 2026-11-03 → 2026-11-10 (+7d) | 2026-11-04 → 2026-11-11 (+7d) |  |  |
| SDR-2-CON-RW-ZA-2340 | Milling of wearing course | 2026-11-03 → 2026-11-10 (+7d) | 2026-11-04 → 2026-11-11 (+7d) |  | 33d → 27d |
| 3 | **Asphalt Works** | 2026-11-05 → 2026-11-12 (+7d) | 2026-11-21 → 2026-11-28 (+7d) |  |  |
| SDR-2-CON-RW-ZA-2350 | Asphalt works 1st Layer with MC-01 | 2026-11-05 → 2026-11-12 (+7d) | 2026-11-08 → 2026-11-15 (+7d) |  | 33d → 27d |
| SDR-2-CON-RW-ZA-2360 | Asphalt works 2nd layer with RC-02 | 2026-11-09 → 2026-11-16 (+7d) | 2026-11-21 → 2026-11-28 (+7d) |  | 48d → 42d |
| 4 | **Kerbstone Installation** | 2026-10-26 → 2026-11-02 (+7d) | 2026-12-15 → 2026-12-22 (+7d) |  |  |
| SDR-2-CON-RW-ZA-3490 | Kerbstone Installation "all Types" Part 1 | 2026-10-26 → 2026-11-02 (+7d) | 2026-11-15 → 2026-11-22 (+7d) |  | 27d → 21d |
| SDR-2-CON-RW-ZA-2370 | Kerbstone Installation "all Types" Part 2 | 2026-11-22 → 2026-11-29 (+7d) | 2026-12-15 → 2026-12-22 (+7d) |  | 48d → 42d |
| 5 | **Interlock Installation** | 2026-12-16 → 2026-12-23 (+7d) | 2027-01-09 → 2027-01-16 (+7d) |  |  |
| SDR-2-CON-RW-ZA-2380 | Interlock Installation | 2026-12-16 → 2026-12-23 (+7d) | 2027-01-09 → 2027-01-16 (+7d) |  | 49d → 43d |
| 6 | **Road Marking** | 2027-01-10 → 2027-01-17 (+7d) | 2027-02-10 → 2027-02-17 (+7d) |  |  |
| SDR-2-CON-RW-ZA-2390 | Retroreflective Thermoplastic White Traffic lines | 2027-01-10 → 2027-01-17 (+7d) | 2027-01-25 → 2027-02-01 (+7d) |  | 49d → 43d |
| SDR-2-CON-RW-ZA-2400 | Retroreflective Thermoplastic Yellow, Traffic lines | 2027-01-26 → 2027-02-02 (+7d) | 2027-02-10 → 2027-02-17 (+7d) |  | 49d → 43d |
| 7 | **Traffic Signage** | 2027-02-11 → 2027-02-18 (+7d) | 2027-03-07 → 2027-03-18 (+11d) |  |  |
| SDR-2-CON-RW-ZA-2410 | Single post-Traffic signs Installation | 2027-02-11 → 2027-02-18 (+7d) | 2027-03-07 → 2027-03-18 (+11d) |  | 49d → 43d |
| 10 | **ROAD WORKS IN ( PH2-A-MCH0 )** |  | 2027-03-21 → 2027-03-28 (+7d) |  |  |
| 11 | **Subgrade** |  | 2026-10-13 → 2026-10-20 (+7d) |  |  |
| SDR-2-CON-RW-ZA-2440 | Subgrade layer works |  | 2026-10-13 → 2026-10-20 (+7d) |  | 14d → 20d |
| 9 | **Earth Works Plot** |  | 2026-10-29 → 2026-11-05 (+7d) |  |  |
| SDR-2-CON-RW-ZA-3310 | Embankments to the Plot 1 Layer |  | 2026-10-05 → 2026-10-12 (+7d) |  | 57d → 51d |
| SDR-2-CON-RW-ZA-2460 | Embankments to the Plot 2 Layer | 2026-10-06 → 2026-10-05 A (-1d) | 2026-10-29 → 2026-11-05 (+7d) | 0% → 25% | 57d → 51d |
| 2 | **Base Course** | 2026-10-14 → 2026-10-21 (+7d) | 2026-10-31 → 2026-11-07 (+7d) |  |  |
| SDR-2-CON-RW-ZA-2470 | Aggregate base course layer | 2026-10-14 → 2026-10-21 (+7d) | 2026-10-31 → 2026-11-07 (+7d) |  | 15d → 21d |
| 8 | **Demolition Work** | 2026-11-01 → 2026-11-08 (+7d) | 2026-11-02 → 2026-11-09 (+7d) |  |  |
| SDR-2-CON-RW-ZA-2480 | Milling of wearing course | 2026-11-01 → 2026-11-08 (+7d) | 2026-11-02 → 2026-11-09 (+7d) |  | 15d → 21d |
| 3 | **Asphalt Works** | 2026-11-04 → 2026-11-11 (+7d) | 2026-11-30 → 2026-12-07 (+7d) |  |  |
| SDR-2-CON-RW-ZA-2490 | Asphalt works 1st Layer with MC-01 | 2026-11-04 → 2026-11-11 (+7d) | 2026-11-17 → 2026-11-24 (+7d) |  | 14d → 20d |
| SDR-2-CON-RW-ZA-2500 | Asphalt works 2nd layer with RC-02 | 2026-11-18 → 2026-11-25 (+7d) | 2026-11-30 → 2026-12-07 (+7d) |  | 14d → 20d |
| 4 | **Kerbstone Installation** | 2026-10-14 → 2026-10-21 (+7d) | 2026-12-24 → 2026-12-31 (+7d) |  |  |
| SDR-2-CON-RW-ZA-3500 | Kerbstone Installation "all Types" Part 1 | 2026-10-14 → 2026-10-21 (+7d) | 2026-11-03 → 2026-11-10 (+7d) |  | 14d → 20d |
| SDR-2-CON-RW-ZA-2510 | Kerbstone Installation "all Types" Part 2 | 2026-12-01 → 2026-12-08 (+7d) | 2026-12-24 → 2026-12-31 (+7d) |  | 14d → 20d |
| 5 | **Interlock Installation** | 2026-12-26 → 2027-01-02 (+7d) | 2027-01-18 → 2027-01-25 (+7d) |  |  |
| SDR-2-CON-RW-ZA-2520 | Interlock Installation | 2026-12-26 → 2027-01-02 (+7d) | 2027-01-18 → 2027-01-25 (+7d) |  | 22d → 28d |
| 6 | **Road Marking** | 2027-01-19 → 2027-01-26 (+7d) | 2027-02-20 → 2027-02-28 (+8d) |  |  |
| SDR-2-CON-RW-ZA-2530 | Retroreflective Thermoplastic White Traffic lines | 2027-01-19 → 2027-01-26 (+7d) | 2027-02-03 → 2027-02-10 (+7d) |  | 22d → 28d |
| SDR-2-CON-RW-ZA-2540 | Retroreflective Thermoplastic Yellow, Traffic lines | 2027-02-04 → 2027-02-11 (+7d) | 2027-02-20 → 2027-02-28 (+8d) |  | 22d → 28d |
| 7 | **Traffic Signage** | 2027-02-21 → 2027-03-01 (+8d) | 2027-03-21 → 2027-03-28 (+7d) |  |  |
| SDR-2-CON-RW-ZA-2550 | Single post-Traffic signs Installation | 2027-02-21 → 2027-03-01 (+8d) | 2027-03-21 → 2027-03-28 (+7d) |  | 22d → 28d |

| ID | Task | Start | Finish | Complete | Total float |
| --- | --- | --- | --- | --- | --- |
| 11 | **ROAD WORKS IN ( PH2-ART-MC00 )** |  | 2027-02-15 → 2027-02-23 (+8d) |  |  |
| 8 | **Demolition Work** | 2026-10-05 → 2026-10-12 (+7d) | 2026-10-06 → 2026-10-13 (+7d) |  |  |
| SDR-2-CON-RW-ZA-2620 | Milling of wearing course | 2026-10-05 → 2026-10-12 (+7d) | 2026-10-06 → 2026-10-13 (+7d) |  | 33d → 27d |
| 3 | **Asphalt Works** | 2026-10-07 → 2026-10-14 (+7d) | 2026-11-02 → 2026-11-09 (+7d) |  |  |
| SDR-2-CON-RW-ZA-2630 | Asphalt works 1st Layer with MC-01 | 2026-10-07 → 2026-10-14 (+7d) | 2026-10-20 → 2026-10-27 (+7d) |  | 33d → 27d |
| SDR-2-CON-RW-ZA-2640 | Asphalt works 2nd layer with RC-02 | 2026-10-21 → 2026-10-28 (+7d) | 2026-11-02 → 2026-11-09 (+7d) |  | 33d → 27d |
| 4 | **Kerbstone Installation** | 2026-10-05 → 2026-10-12 (+7d) | 2026-11-26 → 2026-12-03 (+7d) |  |  |
| SDR-2-CON-RW-ZA-3510 | Kerbstone Installation "all Types" Part 1 | 2026-10-05 → 2026-10-12 (+7d) | 2026-10-25 → 2026-11-01 (+7d) |  | 40d → 34d |
| SDR-2-CON-RW-ZA-2650 | Kerbstone Installation "all Types" Part 2 | 2026-11-03 → 2026-11-10 (+7d) | 2026-11-26 → 2026-12-03 (+7d) |  | 33d → 27d |
| 5 | **Interlock Installation** | 2026-11-28 → 2026-12-05 (+7d) | 2026-12-21 → 2026-12-28 (+7d) |  |  |
| SDR-2-CON-RW-ZA-2660 | Interlock Installation | 2026-11-28 → 2026-12-05 (+7d) | 2026-12-21 → 2026-12-28 (+7d) |  | 33d → 27d |
| 6 | **Road Marking** | 2026-12-22 → 2026-12-29 (+7d) | 2027-01-27 → 2027-02-03 (+7d) |  |  |
| SDR-2-CON-RW-ZA-2670 | Retroreflective Thermoplastic White Traffic lines | 2026-12-22 → 2026-12-29 (+7d) | 2027-01-10 → 2027-01-17 (+7d) |  | 33d → 27d |
| SDR-2-CON-RW-ZA-2680 | Retroreflective Thermoplastic Yellow, Traffic lines | 2027-01-11 → 2027-01-18 (+7d) | 2027-01-27 → 2027-02-03 (+7d) |  | 33d → 27d |
| 7 | **Traffic Signage** | 2027-01-28 → 2027-02-04 (+7d) | 2027-02-15 → 2027-02-23 (+8d) |  |  |
| SDR-2-CON-RW-ZA-2690 | Single post-Traffic signs Installation | 2027-01-28 → 2027-02-04 (+7d) | 2027-02-15 → 2027-02-23 (+8d) |  | 33d → 27d |
| 12 | **ROAD WORKS IN ( PH2-ART-MC10 )** |  | 2027-03-22 → 2027-03-29 (+7d) |  |  |
| 11 | **Subgrade** |  | 2026-10-18 → 2026-10-25 (+7d) |  |  |
| SDR-2-CON-RW-ZA-2720 | Subgrade layer works |  | 2026-10-18 → 2026-10-25 (+7d) | 60% → 90% | 40d → 34d |
| 2 | **Base Course** | 2026-10-19 → 2026-10-26 (+7d) | 2026-10-31 → 2026-11-07 (+7d) |  |  |
| SDR-2-CON-RW-ZA-2750 | Aggregate base course layer | 2026-10-19 → 2026-10-26 (+7d) | 2026-10-31 → 2026-11-07 (+7d) |  | 40d → 34d |
| 8 | **Demolition Work** | 2026-11-01 → 2026-11-08 (+7d) | 2026-11-02 → 2026-11-09 (+7d) |  |  |
| SDR-2-CON-RW-ZA-2760 | Milling of wearing course | 2026-11-01 → 2026-11-08 (+7d) | 2026-11-02 → 2026-11-09 (+7d) |  | 40d → 34d |
| 3 | **Asphalt Works** | 2026-11-03 → 2026-11-10 (+7d) | 2026-12-24 → 2026-12-31 (+7d) |  |  |
| SDR-2-CON-RW-ZA-2770 | Asphalt works 1st Layer with MC-01 | 2026-11-03 → 2026-11-10 (+7d) | 2026-11-14 → 2026-11-21 (+7d) |  | 40d → 34d |
| SDR-2-CON-RW-ZA-2780 | Asphalt works 2nd layer with RC-02 | 2026-11-15 → 2026-11-22 (+7d) | 2026-11-30 → 2026-12-07 (+7d) |  | 40d → 34d |
| SDR-2-CON-RW-ZA-2850 | Asphalt Works 3 rd Layer with RC-02 | 2026-12-01 → 2026-12-08 (+7d) | 2026-12-24 → 2026-12-31 (+7d) |  | 40d → 34d |
| 4 | **Kerbstone Installation** | 2026-10-19 → 2026-10-26 (+7d) | 2027-01-18 → 2027-01-25 (+7d) |  |  |
| SDR-2-CON-RW-ZA-3520 | Kerbstone Installation "all Types" Part 1 | 2026-10-19 → 2026-10-26 (+7d) | 2026-11-08 → 2026-11-15 (+7d) |  | 64d → 58d |
| SDR-2-CON-RW-ZA-2790 | Kerbstone Installation "all Types" Part 2 | 2026-12-26 → 2027-01-02 (+7d) | 2027-01-18 → 2027-01-25 (+7d) |  | 40d → 34d |
| 5 | **Interlock Installation** | 2027-01-19 → 2027-01-26 (+7d) | 2027-02-11 → 2027-02-18 (+7d) |  |  |
| SDR-2-CON-RW-ZA-2800 | Interlock Installation | 2027-01-19 → 2027-01-26 (+7d) | 2027-02-11 → 2027-02-18 (+7d) |  | 40d → 34d |
| 6 | **Road Marking** | 2027-02-13 → 2027-02-20 (+7d) | 2027-03-03 → 2027-03-15 (+12d) |  |  |
| SDR-2-CON-RW-ZA-2810 | Retroreflective Thermoplastic White Traffic lines | 2027-02-13 → 2027-02-20 (+7d) | 2027-02-21 → 2027-03-01 (+8d) |  | 40d → 34d |
| SDR-2-CON-RW-ZA-2820 | Retroreflective Thermoplastic Yellow, Traffic lines | 2027-02-23 → 2027-03-02 (+7d) | 2027-03-03 → 2027-03-15 (+12d) |  | 40d → 34d |
| 7 | **Traffic Signage** | 2027-03-04 → 2027-03-16 (+12d) | 2027-03-22 → 2027-03-29 (+7d) |  |  |
| SDR-2-CON-RW-ZA-2830 | Single post-Traffic signs Installation | 2027-03-04 → 2027-03-16 (+12d) | 2027-03-22 → 2027-03-29 (+7d) |  | 40d → 34d |
| ZG | **ZONE G** |  | 2027-04-05 → 2027-04-12 (+7d) |  |  |
| 5 | **ROAD WORKS IN ( PH2-COL-MC50 )** |  | 2027-04-03 → 2027-04-10 (+7d) |  |  |
| 9 | **Earth Works Plot** |  | 2026-11-08 → 2026-11-15 (+7d) |  |  |
| SDR-2-CON-RW-ZG-1050 | Plot Excavation for cuttings (all types of soil) |  | 2026-10-05 → 2026-10-12 (+7d) |  | 67d → 61d |
| SDR-2-CON-RW-ZG-2260 | Embankments to the Plot 2 Layer |  | 2026-11-08 → 2026-11-15 (+7d) |  | 64d → 58d |
| SDR-2-CON-RW-ZG-1060 | Embankments to the Plot 3 Layer |  | 2026-11-08 → 2026-11-15 (+7d) |  | 64d → 58d |
| 8 | **Demolition Work** | 2026-10-05 → 2026-10-12 (+7d) | 2026-10-27 → 2026-11-03 (+7d) |  |  |
| SDR-2-CON-RW-ZG-1080 | Removal of curbstone | 2026-10-05 → 2026-10-12 (+7d) | 2026-10-17 → 2026-10-24 (+7d) |  | 7d → 1d |
| SDR-2-CON-RW-ZG-1090 | Milling of wearing course | 2026-10-18 → 2026-10-25 (+7d) | 2026-10-27 → 2026-11-03 (+7d) |  | 7d → 1d |
| 3 | **Asphalt Works** |  | 2026-12-13 → 2026-12-20 (+7d) |  |  |
| SDR-2-CON-RW-ZG-1100 | Asphalt works 1st Layer with MC-01 |  | 2026-11-18 → 2026-11-25 (+7d) |  | 7d → 1d |
| SDR-2-CON-RW-ZG-1110 | Asphalt works 2nd layer with RC-02 | 2026-11-19 → 2026-11-26 (+7d) | 2026-12-13 → 2026-12-20 (+7d) |  | 7d → 1d |
| 4 | **Kerbstone Installation** | 2026-10-05 → 2026-10-12 (+7d) | 2027-01-06 → 2027-01-13 (+7d) |  |  |
| SDR-2-CON-RW-ZG-2550 | Kerbstone Installation "all Types" Part 1 | 2026-10-05 → 2026-10-12 (+7d) | 2026-10-25 → 2026-11-01 (+7d) |  | 9d → 3d |
| SDR-2-CON-RW-ZG-1120 | Kerbstone Installation "all Types" Part 2 | 2026-12-14 → 2026-12-21 (+7d) | 2027-01-06 → 2027-01-13 (+7d) |  | 7d → 1d |
| 5 | **Interlock Installation** | 2027-01-07 → 2027-01-14 (+7d) | 2027-01-31 → 2027-02-07 (+7d) |  |  |
| SDR-2-CON-RW-ZG-1130 | Interlock Installation | 2027-01-07 → 2027-01-14 (+7d) | 2027-01-31 → 2027-02-07 (+7d) |  | 7d → 1d |
| 6 | **Road Marking** | 2027-02-01 → 2027-02-08 (+7d) | 2027-03-06 → 2027-03-17 (+11d) |  |  |
| SDR-2-CON-RW-ZG-1140 | Retroreflective Thermoplastic White Traffic lines | 2027-02-01 → 2027-02-08 (+7d) | 2027-02-16 → 2027-02-24 (+8d) |  | 7d → 1d |
| SDR-2-CON-RW-ZG-1150 | Retroreflective Thermoplastic Yellow, Traffic lines | 2027-02-17 → 2027-02-25 (+8d) | 2027-03-06 → 2027-03-17 (+11d) |  | 7d → 1d |
| 7 | **Traffic Signage** | 2027-03-07 → 2027-03-18 (+11d) | 2027-04-03 → 2027-04-10 (+7d) |  |  |
| SDR-2-CON-RW-ZG-1160 | Single post-Traffic signs Installation | 2027-03-07 → 2027-03-18 (+11d) | 2027-04-03 → 2027-04-10 (+7d) |  | 7d → 1d |
| 1 | **ROAD WORKS IN ( PH2-G-MCA0 )** |  | 2027-02-20 → 2027-02-28 (+8d) |  |  |
| 8 | **Demolition Work** | 2026-10-05 → 2026-10-12 (+7d) | 2026-10-22 → 2026-10-29 (+7d) |  |  |
| SDR-2-CON-RW-ZG-1380 | Removal of curbstone | 2026-10-05 → 2026-10-12 (+7d) | 2026-10-14 → 2026-10-21 (+7d) |  | 48d → 42d |
| SDR-2-CON-RW-ZG-1390 | Milling of wearing course | 2026-10-15 → 2026-10-22 (+7d) | 2026-10-22 → 2026-10-29 (+7d) |  | 48d → 42d |
| 3 | **Asphalt Works** |  | 2026-11-08 → 2026-11-15 (+7d) |  |  |
| SDR-2-CON-RW-ZG-1400 | Asphalt works 1st Layer with MC-01 |  | 2026-10-18 → 2026-10-25 (+7d) |  | 61d → 55d |
| SDR-2-CON-RW-ZG-1410 | Asphalt works 2nd layer with RC-02 | 2026-10-19 → 2026-10-26 (+7d) | 2026-11-08 → 2026-11-15 (+7d) |  | 61d → 55d |
| 4 | **Kerbstone Installation** | 2026-10-26 → 2026-11-02 (+7d) | 2026-12-02 → 2026-12-09 (+7d) |  |  |
| SDR-2-CON-RW-ZG-2570 | Kerbstone Installation "all Types" Part 1 | 2026-10-26 → 2026-11-02 (+7d) | 2026-11-15 → 2026-11-22 (+7d) |  | 34d → 28d |
| SDR-2-CON-RW-ZG-1420 | Kerbstone Installation "all Types" Part 2 | 2026-11-09 → 2026-11-16 (+7d) | 2026-12-02 → 2026-12-09 (+7d) |  | 61d → 55d |
| 5 | **Interlock Installation** | 2026-12-03 → 2026-12-10 (+7d) | 2026-12-26 → 2027-01-02 (+7d) |  |  |

| ID | Task | Start | Finish | Complete | Total float |
| --- | --- | --- | --- | --- | --- |
| SDR-2-CON-RW-ZG-1430 | Interlock Installation | 2026-12-03 → 2026-12-10 (+7d) | 2026-12-26 → 2027-01-02 (+7d) |  | 61d → 55d |
| 6 | **Road Marking** | 2026-12-27 → 2027-01-03 (+7d) | 2027-01-27 → 2027-02-03 (+7d) |  |  |
| SDR-2-CON-RW-ZG-1440 | Retroreflective Thermoplastic White Traffic lines | 2026-12-27 → 2027-01-03 (+7d) | 2027-01-11 → 2027-01-18 (+7d) |  | 61d → 55d |
| SDR-2-CON-RW-ZG-1450 | Retroreflective Thermoplastic Yellow, Traffic lines | 2027-01-12 → 2027-01-19 (+7d) | 2027-01-27 → 2027-02-03 (+7d) |  | 61d → 55d |
| 7 | **Traffic Signage** | 2027-01-28 → 2027-02-04 (+7d) | 2027-02-20 → 2027-02-28 (+8d) |  |  |
| SDR-2-CON-RW-ZG-1460 | Single post-Traffic signs Installation | 2027-01-28 → 2027-02-04 (+7d) | 2027-02-20 → 2027-02-28 (+8d) |  | 61d → 55d |
| 6 | **ROAD WORKS IN ( PH2-ART-MC00 )** |  | 2027-04-05 → 2027-04-12 (+7d) |  |  |
| 8 | **Demolition Work** | 2026-10-05 → 2026-10-12 (+7d) | 2026-10-28 → 2026-11-04 (+7d) |  |  |
| SDR-2-CON-RW-ZG-1230 | Removal of curbstone | 2026-10-05 → 2026-10-12 (+7d) | 2026-10-13 → 2026-10-20 (+7d) |  | 28d → 22d |
| SDR-2-CON-RW-ZG-1240 | Milling of wearing course | 2026-10-14 → 2026-10-21 (+7d) | 2026-10-28 → 2026-11-04 (+7d) |  | 28d → 22d |
| 3 | **Asphalt Works** |  | 2026-12-16 → 2026-12-23 (+7d) |  |  |
| SDR-2-CON-RW-ZG-1250 | Asphalt works 1st Layer with MC-01 |  | 2026-11-22 → 2026-11-29 (+7d) |  | 28d → 22d |
| SDR-2-CON-RW-ZG-1260 | Asphalt works 2nd layer with RC-02 | 2026-11-23 → 2026-11-30 (+7d) | 2026-12-16 → 2026-12-23 (+7d) |  | 28d → 22d |
| 4 | **Kerbstone Installation** | 2026-10-05 → 2026-10-12 (+7d) | 2027-01-09 → 2027-01-16 (+7d) |  |  |
| SDR-2-CON-RW-ZG-2560 | Kerbstone Installation "all Types" Part 1 | 2026-10-05 → 2026-10-12 (+7d) | 2026-10-25 → 2026-11-01 (+7d) |  | 34d → 28d |
| SDR-2-CON-RW-ZG-1270 | Kerbstone Installation "all Types" Part 2 | 2026-12-17 → 2026-12-24 (+7d) | 2027-01-09 → 2027-01-16 (+7d) |  | 28d → 22d |
| 5 | **Interlock Installation** | 2027-01-10 → 2027-01-17 (+7d) | 2027-02-02 → 2027-02-09 (+7d) |  |  |
| SDR-2-CON-RW-ZG-1280 | Interlock Installation | 2027-01-10 → 2027-01-17 (+7d) | 2027-02-02 → 2027-02-09 (+7d) |  | 28d → 22d |
| 6 | **Road Marking** | 2027-02-03 → 2027-02-10 (+7d) | 2027-03-08 → 2027-03-20 (+12d) |  |  |
| SDR-2-CON-RW-ZG-1290 | Retroreflective Thermoplastic White Traffic lines | 2027-02-03 → 2027-02-10 (+7d) | 2027-02-18 → 2027-02-27 (+9d) |  | 28d → 22d |
| SDR-2-CON-RW-ZG-1300 | Retroreflective Thermoplastic Yellow, Traffic lines | 2027-02-20 → 2027-02-28 (+8d) | 2027-03-08 → 2027-03-20 (+12d) |  | 28d → 22d |
| 7 | **Traffic Signage** | 2027-03-14 → 2027-03-21 (+7d) | 2027-04-05 → 2027-04-12 (+7d) |  |  |
| SDR-2-CON-RW-ZG-1310 | Single post-Traffic signs Installation | 2027-03-14 → 2027-03-21 (+7d) | 2027-04-05 → 2027-04-12 (+7d) |  | 28d → 22d |
| 8 | **ROAD WORKS IN ( PH2-G-MCE0 )** |  | 2027-03-29 → 2027-04-05 (+7d) |  |  |
| 8 | **Demolition Work** | 2026-10-05 → 2026-10-12 (+7d) | 2026-11-21 → 2026-11-28 (+7d) |  |  |
| SDR-2-CON-RW-ZG-1530 | Removal of curbstone | 2026-10-05 → 2026-10-12 (+7d) | 2026-10-08 → 2026-10-15 (+7d) |  | 66d → 60d |
| SDR-2-CON-RW-ZG-1540 | Milling of wearing course | 2026-11-16 → 2026-11-23 (+7d) | 2026-11-21 → 2026-11-28 (+7d) |  | 34d → 28d |
| 3 | **Asphalt Works** |  | 2026-12-08 → 2026-12-15 (+7d) |  |  |
| SDR-2-CON-RW-ZG-1560 | Asphalt works 2nd layer with RC-02 | 2026-11-22 → 2026-11-29 (+7d) | 2026-12-08 → 2026-12-15 (+7d) |  | 34d → 28d |
| 4 | **Kerbstone Installation** | 2026-10-05 → 2026-10-12 (+7d) | 2027-01-02 → 2027-01-09 (+7d) |  |  |
| SDR-2-CON-RW-ZG-2580 | Kerbstone Installation "all Types" Part 1 | 2026-10-05 → 2026-10-12 (+7d) | 2026-10-25 → 2026-11-01 (+7d) |  | 57d → 51d |
| SDR-2-CON-RW-ZG-1570 | Kerbstone Installation "all Types" Part 2 | 2026-12-09 → 2026-12-16 (+7d) | 2027-01-02 → 2027-01-09 (+7d) |  | 34d → 28d |
| 5 | **Interlock Installation** | 2027-01-03 → 2027-01-10 (+7d) | 2027-01-26 → 2027-02-02 (+7d) |  |  |
| SDR-2-CON-RW-ZG-1580 | Interlock Installation | 2027-01-03 → 2027-01-10 (+7d) | 2027-01-26 → 2027-02-02 (+7d) |  | 34d → 28d |
| 6 | **Road Marking** | 2027-01-27 → 2027-02-03 (+7d) | 2027-03-01 → 2027-03-08 (+7d) |  |  |
| SDR-2-CON-RW-ZG-1590 | Retroreflective Thermoplastic White Traffic lines | 2027-01-27 → 2027-02-03 (+7d) | 2027-02-11 → 2027-02-18 (+7d) |  | 34d → 28d |
| SDR-2-CON-RW-ZG-1600 | Retroreflective Thermoplastic Yellow, Traffic lines | 2027-02-13 → 2027-02-20 (+7d) | 2027-03-01 → 2027-03-08 (+7d) |  | 34d → 28d |
| 7 | **Traffic Signage** | 2027-03-02 → 2027-03-14 (+12d) | 2027-03-29 → 2027-04-05 (+7d) |  |  |
| SDR-2-CON-RW-ZG-1610 | Single post-Traffic signs Installation | 2027-03-02 → 2027-03-14 (+12d) | 2027-03-29 → 2027-04-05 (+7d) |  | 34d → 28d |
| 4 | **ROAD WORKS IN ( PH2-G-MCD0 )** |  | 2027-03-18 → 2027-03-25 (+7d) |  |  |
| 9 | **Earth Works Plot** |  | 2026-10-25 → 2026-11-01 (+7d) |  |  |
| SDR-2-CON-RW-ZG-1650 | Plot Excavation for cuttings (all types of soil) |  | 2026-10-05 → 2026-10-12 (+7d) | 60% → 80% | 74d → 68d |
| SDR-2-CON-RW-ZG-2420 | Embankments to the Plot 1 Layer |  | 2026-10-25 → 2026-10-11 A (-14d) | 80% → 100% | 57d → none |
| SDR-2-CON-RW-ZG-1660 | Embankments to the Plot 2 Layer |  | 2026-10-25 → 2026-11-01 (+7d) | 40% → 50% | 64d → 58d |
| 8 | **Demolition Work** | 2026-10-05 → 2026-10-12 (+7d) | 2026-10-14 → 2026-10-21 (+7d) |  |  |
| SDR-2-CON-RW-ZG-1680 | Removal of curbstone | 2026-10-05 → 2026-10-12 (+7d) | 2026-10-08 → 2026-10-15 (+7d) |  | 40d → 34d |
| SDR-2-CON-RW-ZG-1690 | Milling of wearing course | 2026-10-10 → 2026-10-17 (+7d) | 2026-10-14 → 2026-10-21 (+7d) |  | 40d → 34d |
| 3 | **Asphalt Works** | 2026-10-15 → 2026-10-11 (-4d) | 2026-11-29 → 2026-12-06 (+7d) |  |  |
| SDR-2-CON-RW-ZG-1700 | Asphalt works 1st Layer with MC-01 | 2026-10-15 → 2026-10-11 A (-4d) | 2026-11-04 → 2026-11-11 (+7d) | 0% → 30% | 40d → 34d |
| SDR-2-CON-RW-ZG-1710 | Asphalt works 2nd layer with RC-02 | 2026-11-05 → 2026-11-12 (+7d) | 2026-11-29 → 2026-12-06 (+7d) |  | 40d → 34d |
| 4 | **Kerbstone Installation** | 2026-10-05 → 2026-10-12 (+7d) | 2026-12-23 → 2026-12-30 (+7d) |  |  |
| SDR-2-CON-RW-ZG-2590 | Kerbstone Installation "all Types" Part 1 | 2026-10-05 → 2026-10-12 (+7d) | 2026-10-25 → 2026-11-01 (+7d) |  | 29d → 23d |
| SDR-2-CON-RW-ZG-1720 | Kerbstone Installation "all Types" Part 2 | 2026-11-30 → 2026-12-07 (+7d) | 2026-12-23 → 2026-12-30 (+7d) |  | 40d → 34d |
| 5 | **Interlock Installation** | 2026-12-24 → 2026-12-31 (+7d) | 2027-01-16 → 2027-01-23 (+7d) |  |  |
| SDR-2-CON-RW-ZG-1730 | Interlock Installation | 2026-12-24 → 2026-12-31 (+7d) | 2027-01-16 → 2027-01-23 (+7d) |  | 40d → 34d |
| 6 | **Road Marking** | 2027-01-17 → 2027-01-24 (+7d) | 2027-02-17 → 2027-02-25 (+8d) |  |  |
| SDR-2-CON-RW-ZG-1740 | Retroreflective Thermoplastic White Traffic lines | 2027-01-17 → 2027-01-24 (+7d) | 2027-02-01 → 2027-02-08 (+7d) |  | 40d → 34d |
| SDR-2-CON-RW-ZG-1750 | Retroreflective Thermoplastic Yellow, Traffic lines | 2027-02-02 → 2027-02-09 (+7d) | 2027-02-17 → 2027-02-25 (+8d) |  | 40d → 34d |
| 7 | **Traffic Signage** | 2027-02-18 → 2027-02-27 (+9d) | 2027-03-18 → 2027-03-25 (+7d) |  |  |
| SDR-2-CON-RW-ZG-1760 | Single post-Traffic signs Installation | 2027-02-18 → 2027-02-27 (+9d) | 2027-03-18 → 2027-03-25 (+7d) |  | 40d → 34d |
| 2 | **ROAD WORKS IN ( PH2-G-MCF0 )** |  | 2027-03-17 → 2027-03-24 (+7d) |  |  |
| 8 | **Demolition Work** | 2026-10-05 → 2026-10-12 (+7d) | 2026-11-02 → 2026-11-09 (+7d) |  |  |
| SDR-2-CON-RW-ZG-1830 | Removal of curbstone | 2026-10-05 → 2026-10-12 (+7d) | 2026-10-12 → 2026-10-19 (+7d) |  | 40d → 34d |
| SDR-2-CON-RW-ZG-1840 | Milling of wearing course | 2026-10-26 → 2026-11-02 (+7d) | 2026-11-02 → 2026-11-09 (+7d) |  | 29d → 23d |
| 3 | **Asphalt Works** |  | 2026-11-26 → 2026-12-03 (+7d) |  |  |
| SDR-2-CON-RW-ZG-1860 | Asphalt works 2nd layer with RC-02 | 2026-11-03 → 2026-11-10 (+7d) | 2026-11-26 → 2026-12-03 (+7d) |  | 29d → 23d |
| 4 | **Kerbstone Installation** | 2026-10-05 → 2026-10-12 (+7d) | 2026-12-21 → 2026-12-28 (+7d) |  |  |
| SDR-2-CON-RW-ZG-2600 | Kerbstone Installation "all Types" Part 1 | 2026-10-05 → 2026-10-12 (+7d) | 2026-10-25 → 2026-11-01 (+7d) |  | 27d → 21d |
| SDR-2-CON-RW-ZG-1870 | Kerbstone Installation "all Types" Part 2 | 2026-11-28 → 2026-12-05 (+7d) | 2026-12-21 → 2026-12-28 (+7d) |  | 29d → 23d |
| 5 | **Interlock Installation** | 2026-12-22 → 2026-12-29 (+7d) | 2027-01-14 → 2027-01-21 (+7d) |  |  |

| ID | Task | Start | Finish | Complete | Total float |
| --- | --- | --- | --- | --- | --- |
| SDR-2-CON-RW-ZG-1880 | Interlock Installation | 2026-12-22 → 2026-12-29 (+7d) | 2027-01-14 → 2027-01-21 (+7d) |  | 29d → 23d |
| 6 | **Road Marking** | 2027-01-16 → 2027-01-23 (+7d) | 2027-02-16 → 2027-02-24 (+8d) |  |  |
| SDR-2-CON-RW-ZG-1890 | Retroreflective Thermoplastic White Traffic lines | 2027-01-16 → 2027-01-23 (+7d) | 2027-01-31 → 2027-02-07 (+7d) |  | 29d → 23d |
| SDR-2-CON-RW-ZG-1900 | Retroreflective Thermoplastic Yellow, Traffic lines | 2027-02-01 → 2027-02-08 (+7d) | 2027-02-16 → 2027-02-24 (+8d) |  | 29d → 23d |
| 7 | **Traffic Signage** | 2027-02-17 → 2027-02-25 (+8d) | 2027-03-17 → 2027-03-24 (+7d) |  |  |
| SDR-2-CON-RW-ZG-1910 | Single post-Traffic signs Installation | 2027-02-17 → 2027-02-25 (+8d) | 2027-03-17 → 2027-03-24 (+7d) |  | 29d → 23d |
| 3 | **ROAD WORKS IN ( PH2-G-MCG0 )** |  | 2027-03-20 → 2027-03-27 (+7d) |  |  |
| 9 | **Earth Works Plot** |  | 2026-10-06 → 2026-10-13 (+7d) |  |  |
| SDR-2-CON-RW-ZG-1950 | Plot Excavation for cuttings (all types of soil) |  | 2026-10-05 → 2026-10-12 (+7d) |  | 43d → 37d |
| SDR-2-CON-RW-ZG-2500 | Embankments to the Plot 1 Layer |  | 2026-10-05 → 2026-10-12 (+7d) |  | 61d → 55d |
| SDR-2-CON-RW-ZG-1960 | Embankments to the Plot 2 Layer |  | 2026-10-06 → 2026-10-13 (+7d) |  | 95d → 89d |
| 8 | **Demolition Work** | 2026-10-05 → 2026-10-12 (+7d) | 2026-11-10 → 2026-11-17 (+7d) |  |  |
| SDR-2-CON-RW-ZG-1980 | Removal of curbstone | 2026-10-05 → 2026-10-12 (+7d) | 2026-10-13 → 2026-10-20 (+7d) |  | 43d → 37d |
| SDR-2-CON-RW-ZG-1990 | Milling of wearing course | 2026-11-02 → 2026-11-09 (+7d) | 2026-11-10 → 2026-11-17 (+7d) |  | 27d → 21d |
| 3 | **Asphalt Works** |  | 2026-11-29 → 2026-12-06 (+7d) |  |  |
| SDR-2-CON-RW-ZG-2010 | Asphalt works 2nd layer with RC-02 | 2026-11-11 → 2026-11-18 (+7d) | 2026-11-29 → 2026-12-06 (+7d) |  | 27d → 21d |
| 4 | **Kerbstone Installation** | 2026-10-05 → 2026-10-12 (+7d) | 2026-12-23 → 2026-12-30 (+7d) |  |  |
| SDR-2-CON-RW-ZG-2610 | Kerbstone Installation "all Types" Part 1 | 2026-10-05 → 2026-10-12 (+7d) | 2026-10-25 → 2026-11-01 (+7d) |  | 33d → 27d |
| SDR-2-CON-RW-ZG-2020 | Kerbstone Installation "all Types" Part 2 | 2026-11-30 → 2026-12-07 (+7d) | 2026-12-23 → 2026-12-30 (+7d) |  | 27d → 21d |
| 5 | **Interlock Installation** | 2026-12-24 → 2026-12-31 (+7d) | 2027-01-17 → 2027-01-24 (+7d) |  |  |
| SDR-2-CON-RW-ZG-2030 | Interlock Installation | 2026-12-24 → 2026-12-31 (+7d) | 2027-01-17 → 2027-01-24 (+7d) |  | 27d → 21d |
| 6 | **Road Marking** | 2027-01-18 → 2027-01-25 (+7d) | 2027-02-18 → 2027-02-27 (+9d) |  |  |
| SDR-2-CON-RW-ZG-2040 | Retroreflective Thermoplastic White Traffic lines | 2027-01-18 → 2027-01-25 (+7d) | 2027-02-02 → 2027-02-09 (+7d) |  | 27d → 21d |
| SDR-2-CON-RW-ZG-2050 | Retroreflective Thermoplastic Yellow, Traffic lines | 2027-02-03 → 2027-02-10 (+7d) | 2027-02-18 → 2027-02-27 (+9d) |  | 27d → 21d |
| 7 | **Traffic Signage** | 2027-02-20 → 2027-02-28 (+8d) | 2027-03-20 → 2027-03-27 (+7d) |  |  |
| SDR-2-CON-RW-ZG-2060 | Single post-Traffic signs Installation | 2027-02-20 → 2027-02-28 (+8d) | 2027-03-20 → 2027-03-27 (+7d) |  | 27d → 21d |
| 7 | **ROAD WORKS IN ( PH2-G-MCZ0 )** |  | 2027-03-20 → 2027-02-27 (-21d) |  |  |
| 8 | **Demolition Work** | 2026-10-27 → 2026-10-12 (-15d) | 2026-11-14 → 2026-10-28 (-17d) |  |  |
| SDR-2-CON-RW-ZG-2130 | Removal of curbstone | 2026-10-27 → 2026-10-12 (-15d) | 2026-11-02 → 2026-10-17 (-16d) |  | 27.1d → 41d |
| SDR-2-CON-RW-ZG-2140 | Milling of wearing course | 2026-11-02 → 2026-10-18 (-15d) | 2026-11-14 → 2026-10-28 (-17d) |  | 27.1d → 41d |
| 3 | **Asphalt Works** |  | 2026-11-29 → 2026-11-12 (-17d) |  |  |
| SDR-2-CON-RW-ZG-2160 | Asphalt works 2nd layer with RC-02 | 2026-11-14 → 2026-10-29 (-16d) | 2026-11-29 → 2026-11-12 (-17d) |  | 27.1d → 41d |
| 4 | **Kerbstone Installation** | 2026-10-05 → 2026-10-12 (+7d) | 2026-12-23 → 2026-12-07 (-16d) |  |  |
| SDR-2-CON-RW-ZG-2620 | Kerbstone Installation "all Types" Part 1 | 2026-10-05 → 2026-10-12 (+7d) | 2026-10-25 → 2026-11-01 (+7d) |  | 57d → 51d |
| SDR-2-CON-RW-ZG-2170 | Kerbstone Installation "all Types" Part 2 | 2026-11-29 → 2026-11-14 (-15d) | 2026-12-23 → 2026-12-07 (-16d) |  | 27.1d → 41d |
| 5 | **Interlock Installation** | 2026-12-23 → 2026-12-08 (-15d) | 2027-01-17 → 2026-12-31 (-17d) |  |  |
| SDR-2-CON-RW-ZG-2180 | Interlock Installation | 2026-12-23 → 2026-12-08 (-15d) | 2027-01-17 → 2026-12-31 (-17d) |  | 27.1d → 41d |
| 6 | **Road Marking** | 2027-01-17 → 2027-01-02 (-15d) | 2027-02-18 → 2027-02-02 (-16d) |  |  |
| SDR-2-CON-RW-ZG-2190 | Retroreflective Thermoplastic White Traffic lines | 2027-01-17 → 2027-01-02 (-15d) | 2027-02-02 → 2027-01-17 (-16d) |  | 27.1d → 41d |
| SDR-2-CON-RW-ZG-2200 | Retroreflective Thermoplastic Yellow, Traffic lines | 2027-02-02 → 2027-01-18 (-15d) | 2027-02-18 → 2027-02-02 (-16d) |  | 27.1d → 41d |
| 7 | **Traffic Signage** | 2027-02-18 → 2027-02-03 (-15d) | 2027-03-20 → 2027-02-27 (-21d) |  |  |
| SDR-2-CON-RW-ZG-2210 | Single post-Traffic signs Installation | 2027-02-18 → 2027-02-03 (-15d) | 2027-03-20 → 2027-02-27 (-21d) |  | 27.1d → 41d |
| ST | **Storm Water Drainage Network** |  | 2027-05-08 → 2027-05-15 (+7d) |  |  |
| ZA | **ZONE A** |  | 2027-05-08 → 2027-05-15 (+7d) |  |  |
| 11 | **STORM WATER LINE IN ( PH2-A-MCB0 )** |  | 2027-03-03 → 2027-02-14 (-17d) |  |  |
| 8 | **Pipes Works** |  | 2027-01-18 → 2027-01-25 (+7d) |  |  |
| 2 | **Pipes Laying** |  | 2026-12-22 → 2026-12-29 (+7d) |  |  |
| SDR-2-CON-ST-ZA-1090 | Install ST GRP Pipes |  | 2026-12-22 → 2026-12-29 (+7d) | 40% → 60% | 8.1d → 10.1d |
| 6 | **Testing** | 2026-12-22 → 2026-12-29 (+7d) | 2027-01-16 → 2027-01-23 (+7d) |  |  |
| SDR-2-CON-ST-ZA-3440 | Testing ST GRP Pipes | 2026-12-22 → 2026-12-29 (+7d) | 2027-01-16 → 2027-01-23 (+7d) |  | 8.1d → 10.1d |
| 3 | **Backfilling** | 2026-12-24 → 2026-12-31 (+7d) | 2027-01-18 → 2027-01-25 (+7d) |  |  |
| SDR-2-CON-ST-ZA-1140 | Backfilling ST GRP Pipes | 2026-12-24 → 2026-12-31 (+7d) | 2027-01-18 → 2027-01-25 (+7d) |  | 8.1d → 10.1d |
| 4 | **Manholes** |  | 2027-01-18 → 2027-02-02 (+15d) |  |  |
| 1 | **Excavation** |  | 2026-11-24 → 2026-12-01 (+7d) |  |  |
| SDR-2-CON-ST-ZA-1210 | Excavation Manholes Section 3 |  | 2026-11-24 → 2026-12-01 (+7d) |  | 8d → 10d |
| 2 | **bedding Works** |  | 2026-11-24 → 2026-12-09 (+15d) |  |  |
| SDR-2-CON-ST-ZA-3520 | Sand bedding for Manholes |  | 2026-11-24 → 2026-12-09 (+15d) | 25% → 50% | 8d → 3d |
| 3 | **Install Manholes** |  | 2026-11-24 → 2026-12-09 (+15d) |  |  |
| SDR-2-CON-ST-ZA-3600 | Manholes Installation |  | 2026-11-24 → 2026-12-09 (+15d) | 28% → 50% | 8d → 3d |
| 4 | **Testing** | 2026-12-01 → 2026-12-16 (+15d) | 2026-12-24 → 2027-01-09 (+16d) |  |  |
| SDR-2-CON-ST-ZA-3680 | Testing for Manholes | 2026-12-01 → 2026-12-16 (+15d) | 2026-12-24 → 2027-01-09 (+16d) |  | 8d → 3d |
| 5 | **Backfilling** | 2026-12-26 → 2027-01-10 (+15d) | 2027-01-18 → 2027-02-02 (+15d) |  |  |
| SDR-2-CON-ST-ZA-3760 | Backfilling for Manholes | 2026-12-26 → 2027-01-10 (+15d) | 2027-01-18 → 2027-02-02 (+15d) |  | 8d → 3d |
| 5 | **Catch basin** |  | 2027-03-03 → 2027-02-14 (-17d) |  |  |
| 1 | **Excavation** |  | 2026-10-29 → 2026-11-05 (+7d) |  |  |
| SDR-2-CON-ST-ZA-6930 | Excavation for Catch basin Section 1 |  | 2026-10-05 → 2026-10-12 (+7d) |  | 106d → 100d |
| SDR-2-CON-ST-ZA-1300 | Excavation for Catch basin Section 2 | 2026-10-06 → 2026-10-13 (+7d) | 2026-10-29 → 2026-11-05 (+7d) |  | 106d → 100d |
| 2 | **bedding Works** | 2026-10-31 → 2026-11-07 (+7d) | 2026-11-23 → 2026-11-30 (+7d) |  |  |
| SDR-2-CON-ST-ZA-3840 | Sand Dedding for Catch basin | 2026-10-31 → 2026-11-07 (+7d) | 2026-11-23 → 2026-11-30 (+7d) |  | 106d → 100d |
| 3 | **Install Catch basin** | 2026-11-24 → 2026-12-01 (+7d) | 2026-12-17 → 2026-12-24 (+7d) |  |  |

| ID | Task | Start | Finish | Complete | Total float |
| --- | --- | --- | --- | --- | --- |
| SDR-2-CON-ST-ZA-3900 | Install Catch basin | 2026-11-24 → 2026-12-01 (+7d) | 2026-12-17 → 2026-12-24 (+7d) |  | 106d → 100d |
| 4 | **Testing** | 2026-11-24 → 2026-12-01 (+7d) | 2026-12-17 → 2026-12-24 (+7d) |  |  |
| SDR-2-CON-ST-ZA-3960 | Testing for Catch basin pipe | 2026-11-24 → 2026-12-01 (+7d) | 2026-12-17 → 2026-12-24 (+7d) |  | 106d → 100d |
| 5 | **Backfilling** | 2026-11-24 → 2026-12-01 (+7d) | 2027-03-03 → 2027-02-14 (-17d) |  |  |
| SDR-2-CON-ST-ZA-6940 | Backfilling for Catch basin Section 1 | 2026-11-24 → 2026-12-01 (+7d) | 2026-12-06 → 2026-12-13 (+7d) |  | 118d → 112d |
| SDR-2-CON-ST-ZA-4020 | Backfilling for Catch basin Section 2 | 2027-02-18 → 2027-02-03 (-15d) | 2027-03-03 → 2027-02-14 (-17d) |  | 52.1d → 66d |
| 12 | **STORM WATER LINE IN ( PH2-A-MCD0 )** |  | 2027-04-28 → 2027-05-05 (+7d) |  |  |
| 8 | **Pipes Works** |  | 2026-11-23 → 2026-11-30 (+7d) |  |  |
| 7 | **bedding Works** |  | 2026-10-05 → 2026-10-12 (+7d) |  |  |
| SDR-2-CON-ST-ZA-4090 | Sand bedding for GRP Pipes |  | 2026-10-05 → 2026-10-12 (+7d) |  | 54d → 56d |
| 2 | **Pipes Laying** |  | 2026-10-05 → 2026-10-12 (+7d) |  |  |
| SDR-2-CON-ST-ZA-4040 | Install ST GRP Pipes |  | 2026-10-05 → 2026-10-12 (+7d) |  | 54d → 56d |
| 6 | **Testing** | 2026-10-06 → 2026-10-13 (+7d) | 2026-10-29 → 2026-11-05 (+7d) |  |  |
| SDR-2-CON-ST-ZA-4080 | Testing ST GRP Pipes | 2026-10-06 → 2026-10-13 (+7d) | 2026-10-29 → 2026-11-05 (+7d) |  | 54d → 56d |
| 3 | **Backfilling** | 2026-10-31 → 2026-11-07 (+7d) | 2026-11-23 → 2026-11-30 (+7d) |  |  |
| SDR-2-CON-ST-ZA-4050 | Backfilling ST GRP Pipes | 2026-10-31 → 2026-11-07 (+7d) | 2026-11-23 → 2026-11-30 (+7d) |  | 54d → 56d |
| 4 | **Manholes** |  | 2026-11-24 → 2026-12-01 (+7d) |  |  |
| 2 | **bedding Works** |  | 2026-10-05 → 2026-10-12 (+7d) |  |  |
| SDR-2-CON-ST-ZA-4100 | Sand bedding for Manholes |  | 2026-10-05 → 2026-10-12 (+7d) | 25% → 75% | 87.91d → 85.91d |
| 3 | **Install Manholes** |  | 2026-10-06 → 2026-10-13 (+7d) |  |  |
| SDR-2-CON-ST-ZA-4110 | Manholes Installation |  | 2026-10-06 → 2026-10-13 (+7d) | 28% → 75% | 86d → 84d |
| 4 | **Testing** | 2026-10-07 → 2026-10-14 (+7d) | 2026-10-31 → 2026-11-07 (+7d) |  |  |
| SDR-2-CON-ST-ZA-4120 | Testing for Manholes | 2026-10-07 → 2026-10-14 (+7d) | 2026-10-31 → 2026-11-07 (+7d) |  | 86d → 84d |
| 5 | **Backfilling** | 2026-11-01 → 2026-11-08 (+7d) | 2026-11-24 → 2026-12-01 (+7d) |  |  |
| SDR-2-CON-ST-ZA-4130 | Backfilling for Manholes | 2026-11-01 → 2026-11-08 (+7d) | 2026-11-24 → 2026-12-01 (+7d) |  | 86d → 84d |
| 5 | **Catch basin** |  | 2027-04-28 → 2027-05-05 (+7d) |  |  |
| 1 | **Excavation** |  | 2026-11-22 → 2026-11-29 (+7d) |  |  |
| SDR-2-CON-ST-ZA-6970 | Excavation for Catch basin Section 1 |  | 2026-10-06 → 2026-10-13 (+7d) |  | 121d → 115d |
| SDR-2-CON-ST-ZA-6410 | Excavation for Catch basin Section 2 | 2026-10-07 → 2026-10-14 (+7d) | 2026-10-31 → 2026-11-07 (+7d) |  | 121d → 115d |
| SDR-2-CON-ST-ZA-4070 | Excavation for Catch basin Section 3 | 2026-11-01 → 2026-11-08 (+7d) | 2026-11-22 → 2026-11-29 (+7d) |  | 121d → 115d |
| 2 | **bedding Works** | 2026-12-22 → 2026-12-29 (+7d) | 2027-01-14 → 2027-01-21 (+7d) |  |  |
| SDR-2-CON-ST-ZA-4140 | Sand Dedding for Catch basin | 2026-12-22 → 2026-12-29 (+7d) | 2027-01-14 → 2027-01-21 (+7d) |  | 96d → 90d |
| 3 | **Install Catch basin** | 2027-01-16 → 2027-01-23 (+7d) | 2027-02-08 → 2027-02-15 (+7d) |  |  |
| SDR-2-CON-ST-ZA-4150 | Install Catch basin | 2027-01-16 → 2027-01-23 (+7d) | 2027-02-08 → 2027-02-15 (+7d) |  | 96d → 90d |
| 4 | **Testing** | 2027-04-06 → 2027-04-13 (+7d) | 2027-04-17 → 2027-04-24 (+7d) |  |  |
| SDR-2-CON-ST-ZA-4160 | Testing for Catch basin pipe | 2027-04-06 → 2027-04-13 (+7d) | 2027-04-17 → 2027-04-24 (+7d) |  | 53d → 47d |
| 5 | **Backfilling** | 2027-04-18 → 2027-04-25 (+7d) | 2027-04-28 → 2027-05-05 (+7d) |  |  |
| SDR-2-CON-ST-ZA-4170 | Backfilling for Catch basin | 2027-04-18 → 2027-04-25 (+7d) | 2027-04-28 → 2027-05-05 (+7d) |  | 53d → 47d |
| 13 | **STORM WATER LINE IN ( PH2-A-MCE0 )** |  | 2027-03-15 → 2027-03-22 (+7d) |  |  |
| 8 | **Pipes Works** |  | 2026-11-23 → 2026-11-30 (+7d) |  |  |
| 7 | **bedding Works** |  | 2026-10-05 → 2026-10-12 (+7d) |  |  |
| SDR-2-CON-ST-ZA-4240 | Sand bedding for GRP Pipes |  | 2026-10-05 → 2026-10-12 (+7d) |  | 71d → 65d |
| 2 | **Pipes Laying** |  | 2026-10-05 → 2026-10-12 (+7d) |  |  |
| SDR-2-CON-ST-ZA-4190 | Install ST GRP Pipes |  | 2026-10-05 → 2026-10-12 (+7d) |  | 71d → 65d |
| 6 | **Testing** | 2026-10-06 → 2026-10-13 (+7d) | 2026-10-29 → 2026-11-05 (+7d) |  |  |
| SDR-2-CON-ST-ZA-4230 | Testing ST GRP Pipes | 2026-10-06 → 2026-10-13 (+7d) | 2026-10-29 → 2026-11-05 (+7d) |  | 71d → 65d |
| 3 | **Backfilling** | 2026-10-31 → 2026-11-07 (+7d) | 2026-11-23 → 2026-11-30 (+7d) |  |  |
| SDR-2-CON-ST-ZA-4200 | Backfilling ST GRP Pipes | 2026-10-31 → 2026-11-07 (+7d) | 2026-11-23 → 2026-11-30 (+7d) |  | 71d → 65d |
| 4 | **Manholes** |  | 2026-11-23 → 2026-11-30 (+7d) |  |  |
| 2 | **bedding Works** |  | 2026-10-05 → 2026-10-12 (+7d) |  |  |
| SDR-2-CON-ST-ZA-4250 | Sand bedding for Manholes |  | 2026-10-05 → 2026-10-12 (+7d) | 25% → 50% | 73d → 71d |
| 3 | **Install Manholes** |  | 2026-10-05 → 2026-10-12 (+7d) |  |  |
| SDR-2-CON-ST-ZA-4260 | Manholes Installation |  | 2026-10-05 → 2026-10-12 (+7d) | 28% → 50% | 73d → 71d |
| 4 | **Testing** | 2026-10-06 → 2026-10-13 (+7d) | 2026-10-29 → 2026-11-05 (+7d) |  |  |
| SDR-2-CON-ST-ZA-4270 | Testing for Manholes | 2026-10-06 → 2026-10-13 (+7d) | 2026-10-29 → 2026-11-05 (+7d) |  | 73d → 71d |
| 5 | **Backfilling** | 2026-10-31 → 2026-11-07 (+7d) | 2026-11-23 → 2026-11-30 (+7d) |  |  |
| SDR-2-CON-ST-ZA-4280 | Backfilling for Manholes | 2026-10-31 → 2026-11-07 (+7d) | 2026-11-23 → 2026-11-30 (+7d) |  | 73d → 71d |
| 5 | **Catch basin** |  | 2027-03-15 → 2027-03-22 (+7d) |  |  |
| 1 | **Excavation** |  | 2026-11-07 → 2026-11-09 (+2d) |  |  |
| SDR-2-CON-ST-ZA-6440 | Excavation for Catch basin Section 1 |  | 2026-10-05 → 2026-10-06 A (+1d) | 50% → 100% | 84d → none |
| SDR-2-CON-ST-ZA-4220 | Excavation for Catch basin Section 2 | 2026-10-14 → 2026-09-17 A (-27d) | 2026-11-07 → 2026-11-09 (+2d) | 0% → 50% | 84d → 82d |
| 2 | **bedding Works** | 2026-12-22 → 2026-10-07 (-76d) | 2027-01-14 → 2027-01-21 (+7d) |  |  |
| SDR-2-CON-ST-ZA-4290 | Sand Dedding for Catch basin | 2026-12-22 → 2026-10-07 A (-76d) | 2027-01-14 → 2027-01-21 (+7d) | 0% → 50% | 46d → 40d |
| 3 | **Install Catch basin** | 2027-01-16 → 2026-10-07 (-101d) | 2027-02-08 → 2027-02-15 (+7d) |  |  |
| SDR-2-CON-ST-ZA-4300 | Install Catch basin | 2027-01-16 → 2026-10-07 A (-101d) | 2027-02-08 → 2027-02-15 (+7d) | 0% → 50% | 46d → 40d |
| 4 | **Testing** | 2027-02-15 → 2027-02-23 (+8d) | 2027-02-27 → 2027-03-06 (+7d) |  |  |
| SDR-2-CON-ST-ZA-4310 | Testing for Catch basin pipe | 2027-02-15 → 2027-02-23 (+8d) | 2027-02-27 → 2027-03-06 (+7d) |  | 46d → 40d |
| 5 | **Backfilling** | 2027-02-28 → 2027-03-07 (+7d) | 2027-03-15 → 2027-03-22 (+7d) |  |  |
| SDR-2-CON-ST-ZA-4320 | Backfilling for Catch basin | 2027-02-28 → 2027-03-07 (+7d) | 2027-03-15 → 2027-03-22 (+7d) |  | 46d → 40d |
| 14 | **STORM WATER LINE IN ( PH2-A-MCF0 )** |  | 2027-04-11 → 2027-04-18 (+7d) |  |  |

| ID | Task | Start | Finish | Complete | Total float |
| --- | --- | --- | --- | --- | --- |
| 8 | **Pipes Works** |  | 2026-12-16 → 2026-12-23 (+7d) |  |  |
| 7 | **bedding Works** | 2026-10-05 → 2026-10-12 (+7d) | 2026-10-28 → 2026-11-04 (+7d) |  |  |
| SDR-2-CON-ST-ZA-4390 | Sand bedding for GRP Pipes | 2026-10-05 → 2026-10-12 (+7d) | 2026-10-28 → 2026-11-04 (+7d) |  | 51d → 45d |
| 2 | **Pipes Laying** |  | 2026-10-28 → 2026-11-04 (+7d) |  |  |
| SDR-2-CON-ST-ZA-4340 | Install ST GRP Pipes |  | 2026-10-28 → 2026-11-04 (+7d) |  | 51d → 45d |
| 6 | **Testing** | 2026-10-29 → 2026-11-05 (+7d) | 2026-11-22 → 2026-11-29 (+7d) |  |  |
| SDR-2-CON-ST-ZA-4380 | Testing ST GRP Pipes | 2026-10-29 → 2026-11-05 (+7d) | 2026-11-22 → 2026-11-29 (+7d) |  | 51d → 45d |
| 3 | **Backfilling** | 2026-11-23 → 2026-11-30 (+7d) | 2026-12-16 → 2026-12-23 (+7d) |  |  |
| SDR-2-CON-ST-ZA-4350 | Backfilling ST GRP Pipes | 2026-11-23 → 2026-11-30 (+7d) | 2026-12-16 → 2026-12-23 (+7d) |  | 51d → 45d |
| 4 | **Manholes** |  | 2027-01-11 → 2027-01-18 (+7d) |  |  |
| 1 | **Excavation** |  | 2026-10-05 → 2026-10-12 (+7d) |  |  |
| SDR-2-CON-ST-ZA-4360 | Excavation Manholes Section 2 |  | 2026-10-05 → 2026-10-12 (+7d) |  | 14d → 8d |
| 2 | **bedding Works** | 2026-10-06 → 2026-10-08 (+2d) | 2026-10-29 → 2026-11-05 (+7d) |  |  |
| SDR-2-CON-ST-ZA-4400 | Sand bedding for Manholes | 2026-10-06 → 2026-10-08 A (+2d) | 2026-10-29 → 2026-11-05 (+7d) | 0% → 50% | 14d → 8d |
| 3 | **Install Manholes** | 2026-10-31 → 2026-10-08 (-23d) | 2026-11-23 → 2026-11-30 (+7d) |  |  |
| SDR-2-CON-ST-ZA-4410 | Manholes Installation | 2026-10-31 → 2026-10-08 A (-23d) | 2026-11-23 → 2026-11-30 (+7d) | 0% → 50% | 14d → 8d |
| 4 | **Testing** | 2026-11-24 → 2026-12-01 (+7d) | 2026-12-17 → 2026-12-24 (+7d) |  |  |
| SDR-2-CON-ST-ZA-4420 | Testing for Manholes | 2026-11-24 → 2026-12-01 (+7d) | 2026-12-17 → 2026-12-24 (+7d) |  | 14d → 8d |
| 5 | **Backfilling** | 2026-12-19 → 2026-12-26 (+7d) | 2027-01-11 → 2027-01-18 (+7d) |  |  |
| SDR-2-CON-ST-ZA-4430 | Backfilling for Manholes | 2026-12-19 → 2026-12-26 (+7d) | 2027-01-11 → 2027-01-18 (+7d) |  | 14d → 8d |
| 5 | **Catch basin** |  | 2027-04-11 → 2027-04-18 (+7d) |  |  |
| 1 | **Excavation** |  | 2026-12-17 → 2026-12-24 (+7d) |  |  |
| SDR-2-CON-ST-ZA-6470 | Excavation for Catch basin Section 1 |  | 2026-11-23 → 2026-10-06 A (-48d) | 40% → 100% | 23d → none |
| SDR-2-CON-ST-ZA-4370 | Excavation for Catch basin Section 2 | 2026-11-24 → 2026-09-17 A (-68d) | 2026-12-17 → 2026-12-24 (+7d) | 0% → 50% | 23d → 17d |
| 2 | **bedding Works** | 2026-12-19 → 2026-10-07 (-73d) | 2027-01-11 → 2027-01-18 (+7d) |  |  |
| SDR-2-CON-ST-ZA-4440 | Sand Dedding for Catch basin | 2026-12-19 → 2026-10-07 A (-73d) | 2027-01-11 → 2027-01-18 (+7d) | 0% → 50% | 23d → 17d |
| 3 | **Install Catch basin** | 2027-01-12 → 2026-10-07 (-97d) | 2027-02-04 → 2027-02-11 (+7d) |  |  |
| SDR-2-CON-ST-ZA-4450 | Install Catch basin | 2027-01-12 → 2026-10-07 A (-97d) | 2027-02-04 → 2027-02-11 (+7d) | 0% → 50% | 23d → 17d |
| 4 | **Testing** | 2027-02-06 → 2027-02-13 (+7d) | 2027-03-02 → 2027-03-14 (+12d) |  |  |
| SDR-2-CON-ST-ZA-4460 | Testing for Catch basin pipe | 2027-02-06 → 2027-02-13 (+7d) | 2027-03-02 → 2027-03-14 (+12d) |  | 23d → 17d |
| 5 | **Backfilling** | 2027-03-03 → 2027-03-15 (+12d) | 2027-04-11 → 2027-04-18 (+7d) |  |  |
| SDR-2-CON-ST-ZA-7010 | Backfilling for Catch basin Section 1 | 2027-03-03 → 2027-03-15 (+12d) | 2027-03-24 → 2027-03-31 (+7d) |  | 23d → 17d |
| SDR-2-CON-ST-ZA-4470 | Backfilling for Catch basin Section 2 | 2027-03-25 → 2027-04-01 (+7d) | 2027-04-11 → 2027-04-18 (+7d) |  | 23d → 17d |
| 15 | **STORM WATER LINE IN ( PH2-A-MCG0 )** |  | 2027-04-06 → 2027-04-13 (+7d) |  |  |
| 8 | **Pipes Works** |  | 2027-01-10 → 2027-01-17 (+7d) |  |  |
| 7 | **bedding Works** | 2026-10-05 → 2026-10-08 (+3d) | 2026-10-28 → 2026-11-04 (+7d) |  |  |
| SDR-2-CON-ST-ZA-4540 | Sand bedding for GRP Pipes | 2026-10-05 → 2026-10-08 A (+3d) | 2026-10-28 → 2026-11-04 (+7d) | 0% → 50% | 37d → 31d |
| 2 | **Pipes Laying** | 2026-10-29 → 2026-10-08 (-21d) | 2026-11-22 → 2026-11-29 (+7d) |  |  |
| SDR-2-CON-ST-ZA-4490 | Install ST GRP Pipes | 2026-10-29 → 2026-10-08 A (-21d) | 2026-11-22 → 2026-11-29 (+7d) | 0% → 50% | 37d → 31d |
| 6 | **Testing** | 2026-11-23 → 2026-11-30 (+7d) | 2026-12-16 → 2026-12-23 (+7d) |  |  |
| SDR-2-CON-ST-ZA-4530 | Testing ST GRP Pipes | 2026-11-23 → 2026-11-30 (+7d) | 2026-12-16 → 2026-12-23 (+7d) |  | 37d → 31d |
| 3 | **Backfilling** | 2026-12-17 → 2026-12-24 (+7d) | 2027-01-10 → 2027-01-17 (+7d) |  |  |
| SDR-2-CON-ST-ZA-4500 | Backfilling ST GRP Pipes | 2026-12-17 → 2026-12-24 (+7d) | 2027-01-10 → 2027-01-17 (+7d) |  | 37d → 31d |
| 4 | **Manholes** |  | 2027-01-11 → 2027-01-18 (+7d) |  |  |
| 1 | **Excavation** |  | 2026-10-05 → 2026-10-12 (+7d) |  |  |
| SDR-2-CON-ST-ZA-4510 | Excavation Manholes Section 2 |  | 2026-10-05 → 2026-10-12 (+7d) | 50% → 75% | 14d → 16d |
| 2 | **bedding Works** | 2026-10-06 → 2026-10-07 (+1d) | 2026-10-29 → 2026-11-05 (+7d) |  |  |
| SDR-2-CON-ST-ZA-4550 | Sand bedding for Manholes | 2026-10-06 → 2026-10-07 A (+1d) | 2026-10-29 → 2026-11-05 (+7d) | 0% → 50% | 14d → 16d |
| 3 | **Install Manholes** | 2026-10-31 → 2026-10-08 (-23d) | 2026-11-23 → 2026-11-30 (+7d) |  |  |
| SDR-2-CON-ST-ZA-4560 | Manholes Installation | 2026-10-31 → 2026-10-08 A (-23d) | 2026-11-23 → 2026-11-30 (+7d) | 0% → 50% | 14d → 16d |
| 4 | **Testing** | 2026-11-24 → 2026-12-01 (+7d) | 2026-12-17 → 2026-12-24 (+7d) |  |  |
| SDR-2-CON-ST-ZA-4570 | Testing for Manholes | 2026-11-24 → 2026-12-01 (+7d) | 2026-12-17 → 2026-12-24 (+7d) |  | 14d → 16d |
| 5 | **Backfilling** | 2026-12-19 → 2026-12-26 (+7d) | 2027-01-11 → 2027-01-18 (+7d) |  |  |
| SDR-2-CON-ST-ZA-4580 | Backfilling for Manholes | 2026-12-19 → 2026-12-26 (+7d) | 2027-01-11 → 2027-01-18 (+7d) |  | 14d → 16d |
| 5 | **Catch basin** |  | 2027-04-06 → 2027-04-13 (+7d) |  |  |
| 1 | **Excavation** |  | 2026-12-23 → 2026-12-30 (+7d) |  |  |
| SDR-2-CON-ST-ZA-6500 | Excavation for Catch basin Section 1 |  | 2026-11-23 → 2026-11-30 (+7d) | 40% → 75% | 30d → 24d |
| SDR-2-CON-ST-ZA-4520 | Excavation for Catch basin Section 2 | 2026-11-30 → 2026-12-07 (+7d) | 2026-12-23 → 2026-12-30 (+7d) |  | 30d → 24d |
| 2 | **bedding Works** | 2026-12-24 → 2026-12-31 (+7d) | 2027-01-17 → 2027-01-24 (+7d) |  |  |
| SDR-2-CON-ST-ZA-4590 | Sand Dedding for Catch basin | 2026-12-24 → 2026-12-31 (+7d) | 2027-01-17 → 2027-01-24 (+7d) |  | 30d → 24d |
| 3 | **Install Catch basin** | 2027-01-18 → 2027-01-25 (+7d) | 2027-02-10 → 2027-02-17 (+7d) |  |  |
| SDR-2-CON-ST-ZA-4600 | Install Catch basin | 2027-01-18 → 2027-01-25 (+7d) | 2027-02-10 → 2027-02-17 (+7d) |  | 30d → 24d |
| 4 | **Testing** | 2027-02-11 → 2027-02-18 (+7d) | 2027-02-23 → 2027-03-02 (+7d) |  |  |
| SDR-2-CON-ST-ZA-4610 | Testing for Catch basin pipe | 2027-02-11 → 2027-02-18 (+7d) | 2027-02-23 → 2027-03-02 (+7d) |  | 30d → 24d |
| 5 | **Backfilling** | 2027-02-24 → 2027-03-03 (+7d) | 2027-04-06 → 2027-04-13 (+7d) |  |  |
| SDR-2-CON-ST-ZA-7020 | Backfilling for Catch basin Section 1 | 2027-02-24 → 2027-03-03 (+7d) | 2027-03-16 → 2027-03-23 (+7d) |  | 30d → 24d |
| SDR-2-CON-ST-ZA-4620 | Backfilling for Catch basin Section 2 | 2027-03-21 → 2027-03-28 (+7d) | 2027-04-06 → 2027-04-13 (+7d) |  | 27d → 21d |
| 16 | **STORM WATER LINE IN ( PH2-A-MCH0 )** |  | 2027-04-04 → 2027-04-11 (+7d) |  |  |
| 8 | **Pipes Works** |  | 2027-01-10 → 2027-01-17 (+7d) |  |  |
| 7 | **bedding Works** | 2026-10-05 → 2026-10-10 (+5d) | 2026-10-28 → 2026-11-04 (+7d) |  |  |

| ID | Task | Start | Finish | Complete | Total float | Other |
| --- | --- | --- | --- | --- | --- | --- |
| SDR-2-CON-ST-ZA-4690 | Sand bedding for GRP Pipes | 2026-10-05 → 2026-10-10 A (+5d) | 2026-10-28 → 2026-11-04 (+7d) | 0% → 25% | 17d → 11d |  |
| 2 | **Pipes Laying** | 2026-10-29 → 2026-10-10 (-19d) | 2026-11-22 → 2026-11-29 (+7d) |  |  |  |
| SDR-2-CON-ST-ZA-4640 | Install ST GRP Pipes | 2026-10-29 → 2026-10-10 A (-19d) | 2026-11-22 → 2026-11-29 (+7d) | 0% → 25% | 17d → 11d |  |
| 6 | **Testing** | 2026-11-23 → 2026-11-30 (+7d) | 2026-12-16 → 2026-12-23 (+7d) |  |  |  |
| SDR-2-CON-ST-ZA-4680 | Testing ST GRP Pipes | 2026-11-23 → 2026-11-30 (+7d) | 2026-12-16 → 2026-12-23 (+7d) |  | 17d → 11d |  |
| 3 | **Backfilling** | 2026-12-17 → 2026-12-24 (+7d) | 2027-01-10 → 2027-01-17 (+7d) |  |  |  |
| SDR-2-CON-ST-ZA-4650 | Backfilling ST GRP Pipes | 2026-12-17 → 2026-12-24 (+7d) | 2027-01-10 → 2027-01-17 (+7d) |  | 17d → 11d |  |
| 4 | **Manholes** |  | 2027-01-11 → 2027-01-18 (+7d) |  |  |  |
| 1 | **Excavation** |  | 2026-10-05 → 2026-10-12 (+7d) |  |  |  |
| SDR-2-CON-ST-ZA-6350 | Excavation Manholes Section 2 |  | 2026-10-05 → 2026-10-12 (+7d) |  | 19d → 13d |  |
| 2 | **bedding Works** | 2026-10-06 → 2026-10-13 (+7d) | 2026-10-29 → 2026-11-05 (+7d) |  |  |  |
| SDR-2-CON-ST-ZA-4700 | Sand bedding for Manholes | 2026-10-06 → 2026-10-13 (+7d) | 2026-10-29 → 2026-11-05 (+7d) |  | 19d → 13d |  |
| 3 | **Install Manholes** | 2026-10-31 → 2026-11-07 (+7d) | 2026-11-23 → 2026-11-30 (+7d) |  |  |  |
| SDR-2-CON-ST-ZA-4710 | Manholes Installation | 2026-10-31 → 2026-11-07 (+7d) | 2026-11-23 → 2026-11-30 (+7d) |  | 19d → 13d |  |
| 4 | **Testing** | 2026-11-24 → 2026-12-01 (+7d) | 2026-12-17 → 2026-12-24 (+7d) |  |  |  |
| SDR-2-CON-ST-ZA-4720 | Testing for Manholes | 2026-11-24 → 2026-12-01 (+7d) | 2026-12-17 → 2026-12-24 (+7d) |  | 19d → 13d |  |
| 5 | **Backfilling** | 2026-12-19 → 2026-12-26 (+7d) | 2027-01-11 → 2027-01-18 (+7d) |  |  |  |
| SDR-2-CON-ST-ZA-4730 | Backfilling for Manholes | 2026-12-19 → 2026-12-26 (+7d) | 2027-01-11 → 2027-01-18 (+7d) |  | 19d → 13d |  |
| 5 | **Catch basin** |  | 2027-04-04 → 2027-04-11 (+7d) |  |  |  |
| 1 | **Excavation** |  | 2026-12-17 → 2026-12-24 (+7d) |  |  |  |
| SDR-2-CON-ST-ZA-6530 | Excavation for Catch basin Section 1 |  | 2026-11-23 → 2026-11-30 (+7d) |  | 30d → 24d |  |
| SDR-2-CON-ST-ZA-4670 | Excavation for Catch basin Section 2 | 2026-11-24 → 2026-12-01 (+7d) | 2026-12-17 → 2026-12-24 (+7d) |  | 30d → 24d |  |
| 2 | **bedding Works** | 2026-12-19 → 2026-12-26 (+7d) | 2027-01-11 → 2027-01-18 (+7d) |  |  |  |
| SDR-2-CON-ST-ZA-4740 | Sand Dedding for Catch basin | 2026-12-19 → 2026-12-26 (+7d) | 2027-01-11 → 2027-01-18 (+7d) |  | 30d → 24d |  |
| 3 | **Install Catch basin** | 2027-01-18 → 2027-01-25 (+7d) | 2027-02-10 → 2027-02-17 (+7d) |  |  |  |
| SDR-2-CON-ST-ZA-4750 | Install Catch basin | 2027-01-18 → 2027-01-25 (+7d) | 2027-02-10 → 2027-02-17 (+7d) |  | 30d → 24d |  |
| 4 | **Testing** | 2027-02-11 → 2027-02-18 (+7d) | 2027-02-23 → 2027-03-02 (+7d) |  |  |  |
| SDR-2-CON-ST-ZA-4760 | Testing for Catch basin pipe | 2027-02-11 → 2027-02-18 (+7d) | 2027-02-23 → 2027-03-02 (+7d) |  | 30d → 24d |  |
| 5 | **Backfilling** | 2027-02-24 → 2027-03-03 (+7d) | 2027-04-04 → 2027-04-11 (+7d) |  |  |  |
| SDR-2-CON-ST-ZA-7030 | Backfilling for Catch basin Section 1 | 2027-02-24 → 2027-03-03 (+7d) | 2027-03-16 → 2027-03-23 (+7d) |  | 30d → 24d |  |
| SDR-2-CON-ST-ZA-4770 | Backfilling for Catch basin Section 2 | 2027-03-18 → 2027-03-25 (+7d) | 2027-04-04 → 2027-04-11 (+7d) |  | 29d → 23d |  |
| 1 | **STORM WATER LINE IN ( PH2-A-MCA0 )** |  | 2027-04-05 → 2027-04-12 (+7d) |  |  |  |
| 7 | **bedding Works** |  | 2026-10-28 → 2026-11-04 (+7d) |  |  |  |
| SDR-2-CON-ST-ZA-4840 | Sand bedding for GRP Pipes |  | 2026-10-28 → 2026-11-04 (+7d) |  |  |  |
| 4 | **Manholes** |  | 2027-01-11 → 2027-01-18 (+7d) |  |  |  |
| 1 | **Excavation** |  | 2026-10-05 → 2026-10-12 (+7d) |  |  |  |
| SDR-2-CON-ST-ZA-4810 | Excavation Manholes Section 2 |  | 2026-10-05 → 2026-10-12 (+7d) |  | 14d → 13d |  |
| 2 | **bedding Works** | 2026-10-06 → 2026-10-07 (+1d) | 2026-10-29 → 2026-11-05 (+7d) |  |  |  |
| SDR-2-CON-ST-ZA-4850 | Sand bedding for Manholes | 2026-10-06 → 2026-10-07 A (+1d) | 2026-10-29 → 2026-11-05 (+7d) | 0% → 25% | 14d → 13d |  |
| 3 | **Install Manholes** | 2026-10-31 → 2026-10-07 (-24d) | 2026-11-23 → 2026-11-30 (+7d) |  |  |  |
| SDR-2-CON-ST-ZA-4860 | Manholes Installation | 2026-10-31 → 2026-10-07 A (-24d) | 2026-11-23 → 2026-11-30 (+7d) | 0% → 25% | 14d → 13d |  |
| 4 | **Testing** | 2026-11-24 → 2026-12-01 (+7d) | 2026-12-17 → 2026-12-24 (+7d) |  |  |  |
| SDR-2-CON-ST-ZA-4870 | Testing for Manholes | 2026-11-24 → 2026-12-01 (+7d) | 2026-12-17 → 2026-12-24 (+7d) |  | 14d → 13d |  |
| 5 | **Backfilling** | 2026-12-19 → 2026-12-26 (+7d) | 2027-01-11 → 2027-01-18 (+7d) |  |  |  |
| SDR-2-CON-ST-ZA-4880 | Backfilling for Manholes | 2026-12-19 → 2026-12-26 (+7d) | 2027-01-11 → 2027-01-18 (+7d) |  | 14d → 13d |  |
| 5 | **Catch basin** |  | 2027-04-05 → 2027-04-12 (+7d) |  |  |  |
| 1 | **Excavation** |  | 2026-12-24 → 2026-12-31 (+7d) |  |  |  |
| SDR-2-CON-ST-ZA-6560 | Excavation for Catch basin Section 1 |  | 2026-11-23 → 2026-11-30 (+7d) |  | 24d → 18d |  |
| SDR-2-CON-ST-ZA-4820 | Excavation for Catch basin Section 2 | 2026-12-01 → 2026-12-08 (+7d) | 2026-12-24 → 2026-12-31 (+7d) |  | 29.7d → 23.7d |  |
| 2 | **bedding Works** | 2026-12-26 → 2027-01-02 (+7d) | 2027-01-18 → 2027-01-25 (+7d) |  |  |  |
| SDR-2-CON-ST-ZA-4890 | Sand Dedding for Catch basin | 2026-12-26 → 2027-01-02 (+7d) | 2027-01-18 → 2027-01-25 (+7d) |  | 29.7d → 23.7d |  |
| 3 | **Install Catch basin** | 2027-01-19 → 2027-01-26 (+7d) | 2027-02-11 → 2027-02-18 (+7d) |  |  |  |
| SDR-2-CON-ST-ZA-4900 | Install Catch basin | 2027-01-19 → 2027-01-26 (+7d) | 2027-02-11 → 2027-02-18 (+7d) |  | 29.7d → 23.7d |  |
| 4 | **Testing** | 2027-02-13 → 2027-02-20 (+7d) | 2027-02-27 → 2027-03-06 (+7d) |  |  |  |
| SDR-2-CON-ST-ZA-4910 | Testing for Catch basin pipe | 2027-02-13 → 2027-02-20 (+7d) | 2027-02-27 → 2027-03-06 (+7d) |  | 29.7d → 23.7d |  |
| 5 | **Backfilling** | 2027-02-28 → 2027-03-07 (+7d) | 2027-04-05 → 2027-04-12 (+7d) |  |  |  |
| SDR-2-CON-ST-ZA-7040 | Backfilling for Catch basin Section 1 | 2027-02-28 → 2027-03-07 (+7d) | 2027-03-20 → 2027-03-27 (+7d) |  | 29.7d → 23.7d |  |
| SDR-2-CON-ST-ZA-4920 | Backfilling for Catch basin Section 2 | 2027-03-21 → 2027-03-28 (+7d) | 2027-04-05 → 2027-04-12 (+7d) |  | 29.7d → 23.7d |  |
| 17 | **STORM WATER LINE IN ( PH2-A-MCI0 )** |  | 2027-04-27 → 2027-05-04 (+7d) |  |  | was named STORM WATER LINE IN From MH - A2 / 2 TO STA-A2/10 |
| 8 | **Pipes Works** |  | 2027-01-10 → 2027-01-17 (+7d) |  |  |  |
| 7 | **bedding Works** | 2026-10-05 → 2026-10-12 (+7d) | 2026-10-28 → 2026-11-04 (+7d) |  |  |  |
| SDR-2-CON-ST-ZA-4990 | Sand bedding for GRP Pipes | 2026-10-05 → 2026-10-12 (+7d) | 2026-10-28 → 2026-11-04 (+7d) |  | 20d → 14d |  |
| 2 | **Pipes Laying** | 2026-10-29 → 2026-11-05 (+7d) | 2026-11-22 → 2026-11-29 (+7d) |  |  |  |
| SDR-2-CON-ST-ZA-4940 | Install ST GRP Pipes | 2026-10-29 → 2026-11-05 (+7d) | 2026-11-22 → 2026-11-29 (+7d) |  | 20d → 14d |  |
| 6 | **Testing** | 2026-11-23 → 2026-11-30 (+7d) | 2026-12-16 → 2026-12-23 (+7d) |  |  |  |
| SDR-2-CON-ST-ZA-4980 | Testing ST GRP Pipes | 2026-11-23 → 2026-11-30 (+7d) | 2026-12-16 → 2026-12-23 (+7d) |  | 20d → 14d |  |
| 3 | **Backfilling** | 2026-12-17 → 2026-12-24 (+7d) | 2027-01-10 → 2027-01-17 (+7d) |  |  |  |
| SDR-2-CON-ST-ZA-4950 | Backfilling ST GRP Pipes | 2026-12-17 → 2026-12-24 (+7d) | 2027-01-10 → 2027-01-17 (+7d) |  | 20d → 14d |  |
| 4 | **Manholes** |  | 2027-01-11 → 2027-01-18 (+7d) |  |  |  |
| 1 | **Excavation** |  | 2026-10-05 → 2026-10-12 (+7d) |  |  |  |

| ID | Task | Start | Finish | Total float |
| --- | --- | --- | --- | --- |
| SDR-2-CON-ST-ZA-4960 | Excavation Manholes Section 2 |  | 2026-10-05 → 2026-10-12 (+7d) | 0d → 8d |
| 2 | **bedding Works** | 2026-10-06 → 2026-10-13 (+7d) | 2026-10-29 → 2026-11-05 (+7d) |  |
| SDR-2-CON-ST-ZA-5000 | Sand bedding for Manholes | 2026-10-06 → 2026-10-13 (+7d) | 2026-10-29 → 2026-11-05 (+7d) | 0d → 8d |
| 3 | **Install Manholes** | 2026-10-31 → 2026-11-07 (+7d) | 2026-11-23 → 2026-11-30 (+7d) |  |
| SDR-2-CON-ST-ZA-5010 | Manholes Installation | 2026-10-31 → 2026-11-07 (+7d) | 2026-11-23 → 2026-11-30 (+7d) | 0d → 8d |
| 4 | **Testing** | 2026-11-24 → 2026-12-01 (+7d) | 2026-12-17 → 2026-12-24 (+7d) |  |
| SDR-2-CON-ST-ZA-5020 | Testing for Manholes | 2026-11-24 → 2026-12-01 (+7d) | 2026-12-17 → 2026-12-24 (+7d) | 19d → 13d |
| 5 | **Backfilling** | 2026-12-19 → 2026-12-26 (+7d) | 2027-01-11 → 2027-01-18 (+7d) |  |
| SDR-2-CON-ST-ZA-5030 | Backfilling for Manholes | 2026-12-19 → 2026-12-26 (+7d) | 2027-01-11 → 2027-01-18 (+7d) | 19d → 13d |
| 5 | **Catch basin** | 2026-11-24 → 2026-12-01 (+7d) | 2027-04-27 → 2027-05-04 (+7d) |  |
| 1 | **Excavation** | 2026-11-24 → 2026-12-01 (+7d) | 2027-01-17 → 2027-01-24 (+7d) |  |
| SDR-2-CON-ST-ZA-6590 | Excavation for Catch basin Section 1 | 2026-11-24 → 2026-12-01 (+7d) | 2026-12-17 → 2026-12-24 (+7d) | 0d → 8d |
| SDR-2-CON-ST-ZA-4970 | Excavation for Catch basin Section 2 | 2026-12-24 → 2026-12-31 (+7d) | 2027-01-17 → 2027-01-24 (+7d) | 21d → 15d |
| 2 | **bedding Works** | 2027-01-18 → 2027-01-25 (+7d) | 2027-02-10 → 2027-02-17 (+7d) |  |
| SDR-2-CON-ST-ZA-5040 | Sand Dedding for Catch basin | 2027-01-18 → 2027-01-25 (+7d) | 2027-02-10 → 2027-02-17 (+7d) | 21d → 15d |
| 3 | **Install Catch basin** | 2027-02-11 → 2027-02-18 (+7d) | 2027-03-08 → 2027-03-20 (+12d) |  |
| SDR-2-CON-ST-ZA-5050 | Install Catch basin | 2027-02-11 → 2027-02-18 (+7d) | 2027-03-08 → 2027-03-20 (+12d) | 21d → 15d |
| 4 | **Testing** | 2027-03-14 → 2027-03-21 (+7d) | 2027-03-27 → 2027-04-03 (+7d) |  |
| SDR-2-CON-ST-ZA-5060 | Testing for Catch basin pipe | 2027-03-14 → 2027-03-21 (+7d) | 2027-03-27 → 2027-04-03 (+7d) | 21d → 15d |
| 5 | **Backfilling** | 2027-03-28 → 2027-04-04 (+7d) | 2027-04-27 → 2027-05-04 (+7d) |  |
| SDR-2-CON-ST-ZA-7050 | Backfilling for Catch basin Section 1 | 2027-03-28 → 2027-04-04 (+7d) | 2027-04-13 → 2027-04-20 (+7d) | 21d → 15d |
| SDR-2-CON-ST-ZA-5070 | Backfilling for Catch basin Section 2 | 2027-04-14 → 2027-04-21 (+7d) | 2027-04-27 → 2027-05-04 (+7d) | 21d → 15d |
| 18 | **STORM WATER LINE From STA-A2/10 TO STA-A2/1** |  | 2027-05-08 → 2027-05-15 (+7d) |  |
| 8 | **Pipes Works** |  | 2027-01-10 → 2027-01-17 (+7d) |  |
| 7 | **bedding Works** | 2026-10-05 → 2026-10-12 (+7d) | 2026-10-28 → 2026-11-04 (+7d) |  |
| SDR-2-CON-ST-ZA-5140 | Sand bedding for GRP Pipes | 2026-10-05 → 2026-10-12 (+7d) | 2026-10-28 → 2026-11-04 (+7d) | 9d → 3d |
| 2 | **Pipes Laying** | 2026-10-29 → 2026-11-05 (+7d) | 2026-11-22 → 2026-11-29 (+7d) |  |
| SDR-2-CON-ST-ZA-5090 | Install ST GRP Pipes | 2026-10-29 → 2026-11-05 (+7d) | 2026-11-22 → 2026-11-29 (+7d) | 9d → 3d |
| 6 | **Testing** | 2026-11-23 → 2026-11-30 (+7d) | 2026-12-16 → 2026-12-23 (+7d) |  |
| SDR-2-CON-ST-ZA-5130 | Testing ST GRP Pipes | 2026-11-23 → 2026-11-30 (+7d) | 2026-12-16 → 2026-12-23 (+7d) | 9d → 3d |
| 3 | **Backfilling** | 2026-12-17 → 2026-12-24 (+7d) | 2027-01-10 → 2027-01-17 (+7d) |  |
| SDR-2-CON-ST-ZA-5100 | Backfilling ST GRP Pipes | 2026-12-17 → 2026-12-24 (+7d) | 2027-01-10 → 2027-01-17 (+7d) | 9d → 3d |
| 4 | **Manholes** | 2026-10-05 → 2026-10-12 (+7d) | 2027-03-01 → 2027-03-08 (+7d) |  |
| 1 | **Excavation** | 2026-10-05 → 2026-10-12 (+7d) | 2026-11-22 → 2026-11-29 (+7d) |  |
| SDR-2-CON-ST-ZA-6610 | Excavation Manholes Section 1 | 2026-10-05 → 2026-10-12 (+7d) | 2026-10-28 → 2026-11-04 (+7d) | 4d → 2d |
| SDR-2-CON-ST-ZA-5110 | Excavation Manholes Section 2 | 2026-10-29 → 2026-11-05 (+7d) | 2026-11-22 → 2026-11-29 (+7d) | 4d → 2d |
| 2 | **bedding Works** | 2026-11-23 → 2026-11-30 (+7d) | 2026-12-16 → 2026-12-23 (+7d) |  |
| SDR-2-CON-ST-ZA-5150 | Sand bedding for Manholes | 2026-11-23 → 2026-11-30 (+7d) | 2026-12-16 → 2026-12-23 (+7d) | 4d → 2d |
| 3 | **Install Manholes** | 2026-12-17 → 2026-12-24 (+7d) | 2027-01-10 → 2027-01-17 (+7d) |  |
| SDR-2-CON-ST-ZA-5160 | Manholes Installation | 2026-12-17 → 2026-12-24 (+7d) | 2027-01-10 → 2027-01-17 (+7d) | 4d → 2d |
| 4 | **Testing** | 2027-01-11 → 2027-01-18 (+7d) | 2027-02-03 → 2027-02-10 (+7d) |  |
| SDR-2-CON-ST-ZA-5170 | Testing for Manholes | 2027-01-11 → 2027-01-18 (+7d) | 2027-02-03 → 2027-02-10 (+7d) | 4d → 2d |
| 5 | **Backfilling** | 2027-02-04 → 2027-02-11 (+7d) | 2027-03-01 → 2027-03-08 (+7d) |  |
| SDR-2-CON-ST-ZA-5180 | Backfilling for Manholes | 2027-02-04 → 2027-02-11 (+7d) | 2027-03-01 → 2027-03-08 (+7d) | 4d → 2d |
| 5 | **Catch basin** | 2026-12-19 → 2026-12-26 (+7d) | 2027-05-08 → 2027-05-15 (+7d) |  |
| 1 | **Excavation** | 2026-12-19 → 2026-12-26 (+7d) | 2027-02-04 → 2027-02-11 (+7d) |  |
| SDR-2-CON-ST-ZA-6620 | Excavation for Catch basin Section 1 | 2026-12-19 → 2026-12-26 (+7d) | 2027-01-11 → 2027-01-18 (+7d) | 0d → 8d |
| SDR-2-CON-ST-ZA-5120 | Excavation for Catch basin Section 2 | 2027-01-12 → 2027-01-19 (+7d) | 2027-02-04 → 2027-02-11 (+7d) | 0d → 8d |
| 2 | **bedding Works** | 2027-02-06 → 2027-02-13 (+7d) | 2027-03-02 → 2027-03-14 (+12d) |  |
| SDR-2-CON-ST-ZA-5190 | Sand Dedding for Catch basin | 2027-02-06 → 2027-02-13 (+7d) | 2027-03-02 → 2027-03-14 (+12d) | 0d → 8d |
| 3 | **Install Catch basin** | 2027-03-03 → 2027-03-15 (+12d) | 2027-03-31 → 2027-04-07 (+7d) |  |
| SDR-2-CON-ST-ZA-5200 | Install Catch basin | 2027-03-03 → 2027-03-15 (+12d) | 2027-03-31 → 2027-04-07 (+7d) | 0d → 8d |
| 4 | **Testing** | 2027-04-01 → 2027-04-08 (+7d) | 2027-04-14 → 2027-04-21 (+7d) |  |
| SDR-2-CON-ST-ZA-5210 | Testing for Catch basin pipe | 2027-04-01 → 2027-04-08 (+7d) | 2027-04-14 → 2027-04-21 (+7d) | 0d → 8d |
| 5 | **Backfilling** | 2027-04-15 → 2027-04-22 (+7d) | 2027-05-08 → 2027-05-15 (+7d) |  |
| SDR-2-CON-ST-ZA-7060 | Backfilling for Catch basin Section 1 | 2027-04-15 → 2027-04-22 (+7d) | 2027-04-29 → 2027-05-06 (+7d) | 0d → 8d |
| SDR-2-CON-ST-ZA-5220 | Backfilling for Catch basin Section 2 | 2027-04-22 → 2027-04-29 (+7d) | 2027-05-08 → 2027-05-15 (+7d) | 0d → 8d |
| 19 | **STORM WATER LINE From IP A7 To Pond A** |  | 2027-04-14 → 2027-04-21 (+7d) |  |
| 8 | **Pipes Works** |  | 2027-01-11 → 2027-01-18 (+7d) |  |
| 1 | **Excavation** |  | 2026-10-05 → 2026-10-12 (+7d) |  |
| SDR-2-CON-ST-ZA-5830 | Excavation for GRP Pipes Section 2 |  | 2026-10-05 → 2026-10-12 (+7d) | 25d → 19d |
| SDR-2-CON-ST-ZA-6630 | Excavation for GRP Pipes Section 1 |  | 2026-10-05 → 2026-10-12 (+7d) | 20d → 14d |
| 7 | **bedding Works** | 2026-10-06 → 2026-10-13 (+7d) | 2026-10-29 → 2026-11-05 (+7d) |  |
| SDR-2-CON-ST-ZA-5890 | Sand bedding for GRP Pipes | 2026-10-06 → 2026-10-13 (+7d) | 2026-10-29 → 2026-11-05 (+7d) | 25d → 19d |
| 2 | **Pipes Laying** | 2026-10-31 → 2026-11-07 (+7d) | 2026-11-23 → 2026-11-30 (+7d) |  |
| SDR-2-CON-ST-ZA-5840 | Install ST GRP Pipes | 2026-10-31 → 2026-11-07 (+7d) | 2026-11-23 → 2026-11-30 (+7d) | 25d → 19d |
| 6 | **Testing** | 2026-11-24 → 2026-12-01 (+7d) | 2026-12-17 → 2026-12-24 (+7d) |  |
| SDR-2-CON-ST-ZA-5880 | Testing ST GRP Pipes | 2026-11-24 → 2026-12-01 (+7d) | 2026-12-17 → 2026-12-24 (+7d) | 25d → 19d |
| 3 | **Backfilling** | 2026-12-19 → 2026-12-26 (+7d) | 2027-01-11 → 2027-01-18 (+7d) |  |
| SDR-2-CON-ST-ZA-5850 | Backfilling ST GRP Pipes | 2026-12-19 → 2026-12-26 (+7d) | 2027-01-11 → 2027-01-18 (+7d) | 25d → 19d |

| ID | Task | Start | Finish | Total float |
| --- | --- | --- | --- | --- |
| 4 | **Manholes** | 2026-10-05 → 2026-10-12 (+7d) | 2027-03-04 → 2027-03-16 (+12d) |  |
| 1 | **Excavation** | 2026-10-05 → 2026-10-12 (+7d) | 2026-11-25 → 2026-12-02 (+7d) |  |
| SDR-2-CON-ST-ZA-6640 | Excavation Manholes Section 1 | 2026-10-05 → 2026-10-12 (+7d) | 2026-10-28 → 2026-11-04 (+7d) | 20d → 14d |
| SDR-2-CON-ST-ZA-5860 | Excavation Manholes Section 2 | 2026-11-02 → 2026-11-09 (+7d) | 2026-11-25 → 2026-12-02 (+7d) | 20d → 14d |
| 2 | **bedding Works** | 2026-11-26 → 2026-12-03 (+7d) | 2026-12-20 → 2026-12-27 (+7d) |  |
| SDR-2-CON-ST-ZA-5900 | Sand bedding for Manholes | 2026-11-26 → 2026-12-03 (+7d) | 2026-12-20 → 2026-12-27 (+7d) | 20d → 14d |
| 3 | **Install Manholes** | 2026-12-21 → 2026-12-28 (+7d) | 2027-01-13 → 2027-01-20 (+7d) |  |
| SDR-2-CON-ST-ZA-5910 | Manholes Installation | 2026-12-21 → 2026-12-28 (+7d) | 2027-01-13 → 2027-01-20 (+7d) | 20d → 14d |
| 4 | **Testing** | 2027-01-14 → 2027-01-21 (+7d) | 2027-02-07 → 2027-02-14 (+7d) |  |
| SDR-2-CON-ST-ZA-5920 | Testing for Manholes | 2027-01-14 → 2027-01-21 (+7d) | 2027-02-07 → 2027-02-14 (+7d) | 20d → 14d |
| 5 | **Backfilling** | 2027-02-08 → 2027-02-15 (+7d) | 2027-03-04 → 2027-03-16 (+12d) |  |
| SDR-2-CON-ST-ZA-5930 | Backfilling for Manholes | 2027-02-08 → 2027-02-15 (+7d) | 2027-03-04 → 2027-03-16 (+12d) | 20d → 14d |
| 5 | **Catch basin** | 2026-11-24 → 2026-12-01 (+7d) | 2027-04-14 → 2027-04-21 (+7d) |  |
| 1 | **Excavation** | 2026-11-24 → 2026-12-01 (+7d) | 2027-01-11 → 2027-01-18 (+7d) |  |
| SDR-2-CON-ST-ZA-6650 | Excavation for Catch basin Section 1 | 2026-11-24 → 2026-12-01 (+7d) | 2026-12-17 → 2026-12-24 (+7d) | 24d → 18d |
| SDR-2-CON-ST-ZA-5870 | Excavation for Catch basin Section 2 | 2026-12-19 → 2026-12-26 (+7d) | 2027-01-11 → 2027-01-18 (+7d) | 24d → 18d |
| 2 | **bedding Works** | 2027-01-12 → 2027-01-19 (+7d) | 2027-02-04 → 2027-02-11 (+7d) |  |
| SDR-2-CON-ST-ZA-5940 | Sand Dedding for Catch basin | 2027-01-12 → 2027-01-19 (+7d) | 2027-02-04 → 2027-02-11 (+7d) | 24d → 18d |
| 3 | **Install Catch basin** | 2027-02-06 → 2027-02-13 (+7d) | 2027-03-02 → 2027-03-14 (+12d) |  |
| SDR-2-CON-ST-ZA-5950 | Install Catch basin | 2027-02-06 → 2027-02-13 (+7d) | 2027-03-02 → 2027-03-14 (+12d) | 24d → 18d |
| 4 | **Testing** | 2027-03-03 → 2027-03-15 (+12d) | 2027-03-16 → 2027-03-23 (+7d) |  |
| SDR-2-CON-ST-ZA-5960 | Testing for Catch basin pipe | 2027-03-03 → 2027-03-15 (+12d) | 2027-03-16 → 2027-03-23 (+7d) | 24d → 18d |
| 5 | **Backfilling** | 2027-03-22 → 2027-03-29 (+7d) | 2027-04-14 → 2027-04-21 (+7d) |  |
| SDR-2-CON-ST-ZA-5970 | Backfilling for Catch basin | 2027-03-22 → 2027-03-29 (+7d) | 2027-04-14 → 2027-04-21 (+7d) | 20d → 14d |
| 2 | **Concrete Box culverts** |  | 2026-12-01 → 2026-12-08 (+7d) |  |
| 6 | **For Pond A** |  | 2026-10-28 → 2026-11-04 (+7d) |  |
| 3 | **Plain Concrete** | 2026-10-05 → 2026-10-12 (+7d) | 2026-10-11 → 2026-10-18 (+7d) |  |
| SDR-2-CON-ST-ZA-3290 | Plain Concrete for box culvert | 2026-10-05 → 2026-10-12 (+7d) | 2026-10-11 → 2026-10-18 (+7d) | 27d → 35d |
| 4 | **Steel Reinforcement** | 2026-10-12 → 2026-10-19 (+7d) | 2026-10-20 → 2026-10-27 (+7d) |  |
| SDR-2-CON-ST-ZA-3300 | Steel Reinforcement for box culverts | 2026-10-12 → 2026-10-19 (+7d) | 2026-10-20 → 2026-10-27 (+7d) | 27d → 35d |
| 5 | **Reinforced Concrete** | 2026-10-21 → 2026-10-28 (+7d) | 2026-10-28 → 2026-11-04 (+7d) |  |
| SDR-2-CON-ST-ZA-3310 | Reinforced Concrete for box culvert | 2026-10-21 → 2026-10-28 (+7d) | 2026-10-28 → 2026-11-04 (+7d) | 27d → 35d |
| 7 | **For Pond B** |  | 2026-11-07 → 2026-11-14 (+7d) |  |
| 2 | **Backfilling with common / suitable excavated material** | 2026-10-05 → 2026-10-12 (+7d) | 2026-10-13 → 2026-10-20 (+7d) |  |
| SDR-2-CON-ST-ZA-6260 | Backfilling with common / suitable excavated material or with suitable imported material | 2026-10-05 → 2026-10-12 (+7d) | 2026-10-13 → 2026-10-20 (+7d) | 17d → 25d |
| 3 | **Plain Concrete** | 2026-10-14 → 2026-10-21 (+7d) | 2026-10-20 → 2026-10-27 (+7d) |  |
| SDR-2-CON-ST-ZA-6270 | Plain Concrete for box culvert | 2026-10-14 → 2026-10-21 (+7d) | 2026-10-20 → 2026-10-27 (+7d) | 17d → 25d |
| 4 | **Steel Reinforcement** | 2026-10-21 → 2026-10-28 (+7d) | 2026-10-29 → 2026-11-05 (+7d) |  |
| SDR-2-CON-ST-ZA-6280 | Steel Reinforcement for box culverts | 2026-10-21 → 2026-10-28 (+7d) | 2026-10-29 → 2026-11-05 (+7d) | 17d → 25d |
| 5 | **Reinforced Concrete** | 2026-10-31 → 2026-11-07 (+7d) | 2026-11-07 → 2026-11-14 (+7d) |  |
| SDR-2-CON-ST-ZA-6290 | Reinforced Concrete for box culvert | 2026-10-31 → 2026-11-07 (+7d) | 2026-11-07 → 2026-11-14 (+7d) | 17d → 25d |
| 8 | **For Pond C** | 2026-10-08 → 2026-10-15 (+7d) | 2026-12-01 → 2026-12-08 (+7d) |  |
| 1 | **Excavation** | 2026-10-08 → 2026-10-15 (+7d) | 2026-10-19 → 2026-10-26 (+7d) |  |
| SDR-2-CON-ST-ZA-6300 | Excavation for Box Culvert. | 2026-10-08 → 2026-10-15 (+7d) | 2026-10-19 → 2026-10-26 (+7d) | 9d → 17d |
| 2 | **Backfilling with common / suitable excavated material** | 2026-10-20 → 2026-10-27 (+7d) | 2026-10-28 → 2026-11-04 (+7d) |  |
| SDR-2-CON-ST-ZA-6310 | Backfilling with common / suitable excavated material or with suitable imported material | 2026-10-20 → 2026-10-27 (+7d) | 2026-10-28 → 2026-11-04 (+7d) | 9d → 17d |
| 3 | **Plain Concrete** | 2026-10-29 → 2026-11-05 (+7d) | 2026-11-04 → 2026-11-11 (+7d) |  |
| SDR-2-CON-ST-ZA-6320 | Plain Concrete for box culvert | 2026-10-29 → 2026-11-05 (+7d) | 2026-11-04 → 2026-11-11 (+7d) | 9d → 17d |
| 4 | **Steel Reinforcement** | 2026-11-05 → 2026-11-12 (+7d) | 2026-11-14 → 2026-11-21 (+7d) |  |
| SDR-2-CON-ST-ZA-6330 | Steel Reinforcement for box culverts | 2026-11-05 → 2026-11-12 (+7d) | 2026-11-14 → 2026-11-21 (+7d) | 9d → 17d |
| 5 | **Reinforced Concrete** | 2026-11-24 → 2026-12-01 (+7d) | 2026-12-01 → 2026-12-08 (+7d) |  |
| SDR-2-CON-ST-ZA-6340 | Reinforced Concrete for box culvert | 2026-11-24 → 2026-12-01 (+7d) | 2026-12-01 → 2026-12-08 (+7d) | 9d → 17d |
| 3 | **Drainage works for ponds and open canals** |  | 2027-03-30 → 2027-04-06 (+7d) |  |
| 7 | **Pond A** |  | 2026-12-23 → 2026-12-30 (+7d) |  |
| 3 | **Sand lining for pond bed** |  | 2026-11-04 → 2026-11-11 (+7d) |  |
| SDR-2-CON-ST-ZA-6690 | Sand lining for pond bed Section 1 & Section 2 |  | 2026-10-07 → 2026-10-14 (+7d) | 56d → 50d |
| SDR-2-CON-ST-ZA-6150 | Sand lining for pond bed Section 3 & Section 4 | 2026-10-12 → 2026-10-19 (+7d) | 2026-11-04 → 2026-11-11 (+7d) | 56d → 50d |
| 6 | **Pipe Encasements,** | 2026-11-05 → 2026-11-12 (+7d) | 2026-11-29 → 2026-12-06 (+7d) |  |
| SDR-2-CON-ST-ZA-6180 | Pipe encasement | 2026-11-05 → 2026-11-12 (+7d) | 2026-11-29 → 2026-12-06 (+7d) | 56d → 50d |
| 5 | **Concrete Outfalls** | 2026-11-30 → 2026-12-07 (+7d) | 2026-12-23 → 2026-12-30 (+7d) |  |
| SDR-2-CON-ST-ZA-6170 | Concrete Outfall structure. | 2026-11-30 → 2026-12-07 (+7d) | 2026-12-23 → 2026-12-30 (+7d) | 56d → 50d |
| 8 | **Pond B** |  | 2027-03-30 → 2027-04-06 (+7d) |  |
| 3 | **Sand lining for pond bed** |  | 2026-12-23 → 2026-12-30 (+7d) |  |
| SDR-2-CON-ST-ZA-6720 | Sand lining for pond bed Section 1 |  | 2026-12-01 → 2026-12-08 (+7d) | 19d → 17d |
| SDR-2-CON-ST-ZA-6210 | Sand lining for pond bed Section 2 | 2026-12-02 → 2026-12-09 (+7d) | 2026-12-23 → 2026-12-30 (+7d) | 19d → 17d |
| 6 | **Pipe Encasements,** | 2026-12-24 → 2026-12-31 (+7d) | 2027-01-17 → 2027-01-24 (+7d) |  |
| SDR-2-CON-ST-ZA-6240 | Pipe encasement | 2026-12-24 → 2026-12-31 (+7d) | 2027-01-17 → 2027-01-24 (+7d) | 19d → 17d |
| 5 | **Concrete Outfalls** | 2027-01-18 → 2027-01-25 (+7d) | 2027-02-10 → 2027-02-17 (+7d) |  |
| SDR-2-CON-ST-ZA-6230 | Concrete Outfall structure. | 2027-01-18 → 2027-01-25 (+7d) | 2027-02-10 → 2027-02-17 (+7d) | 19d → 17d |
| 4 | **Loose Riprap** | 2027-03-02 → 2027-03-14 (+12d) | 2027-03-30 → 2027-04-06 (+7d) |  |

| ID | Task | Start | Finish | Complete | Total float |
| --- | --- | --- | --- | --- | --- |
| SDR-2-CON-ST-ZA-6220 | Loose Riprap work | 2027-03-02 → 2027-03-14 (+12d) | 2027-03-30 → 2027-04-06 (+7d) |  | 4d → 2d |
| 9 | **Pond C** |  | 2027-03-02 → 2027-03-14 (+12d) |  |  |
| 1 | **Excavation** |  | 2026-11-01 → 2026-11-08 (+7d) |  |  |
| SDR-2-CON-ST-ZA-6740 | Excavation for cutting material. Section 2 |  | 2026-10-07 → 2026-10-14 (+7d) |  | 8d → 2d |
| SDR-2-CON-ST-ZA-3320 | Excavation for cutting material. Section 3 | 2026-10-08 → 2026-10-15 (+7d) | 2026-11-01 → 2026-11-08 (+7d) |  | 8d → 2d |
| 3 | **Sand lining for pond bed** | 2026-11-02 → 2026-11-09 (+7d) | 2026-12-17 → 2026-12-24 (+7d) |  |  |
| SDR-2-CON-ST-ZA-6750 | Sand lining for pond bed Section 1 | 2026-11-02 → 2026-11-09 (+7d) | 2026-11-24 → 2026-12-01 (+7d) |  | 8d → 2d |
| SDR-2-CON-ST-ZA-3340 | Sand lining for pond bed Section 2 &Section 3 | 2026-11-25 → 2026-12-02 (+7d) | 2026-12-17 → 2026-12-24 (+7d) |  | 8d → 2d |
| 6 | **Pipe Encasements,** | 2026-12-19 → 2026-12-26 (+7d) | 2027-01-11 → 2027-01-18 (+7d) |  |  |
| SDR-2-CON-ST-ZA-3370 | Pipe encasement | 2026-12-19 → 2026-12-26 (+7d) | 2027-01-11 → 2027-01-18 (+7d) |  | 8d → 2d |
| 5 | **Concrete Outfalls** | 2027-01-12 → 2027-01-19 (+7d) | 2027-02-04 → 2027-02-11 (+7d) |  |  |
| SDR-2-CON-ST-ZA-3360 | Concrete Outfall structure. | 2027-01-12 → 2027-01-19 (+7d) | 2027-02-04 → 2027-02-11 (+7d) |  | 8d → 2d |
| 4 | **Loose Riprap** | 2027-02-06 → 2027-02-13 (+7d) | 2027-03-02 → 2027-03-14 (+12d) |  |  |
| SDR-2-CON-ST-ZA-3350 | Loose Riprap work | 2027-02-06 → 2027-02-13 (+7d) | 2027-03-02 → 2027-03-14 (+12d) |  | 8d → 2d |
| ZG | **ZONE G** |  | 2026-10-14 → 2026-10-21 (+7d) |  |  |
| 11 | **STORM WATER LINE IN ( PH2-G-MCE0 )** |  | 2026-10-07 → 2026-10-14 (+7d) |  |  |
| 4 | **Manholes** |  | 2026-10-07 → 2026-10-14 (+7d) |  |  |
| 4 | **Testing** |  | 2026-10-07 → 2026-10-14 (+7d) |  |  |
| SDR-2-CON-ST-ZA-5470 | Testing for Manholes |  | 2026-10-07 → 2026-10-14 (+7d) |  | 157d → 151d |
| 12 | **STORM WATER LINE IN ( PH2-G-MCF0 )** |  | 2026-10-07 → 2026-10-14 (+7d) |  |  |
| 4 | **Manholes** |  | 2026-10-07 → 2026-10-14 (+7d) |  |  |
| 4 | **Testing** |  | 2026-10-07 → 2026-10-14 (+7d) |  |  |
| SDR-2-CON-ST-ZA-5620 | Testing for Manholes |  | 2026-10-07 → 2026-10-14 (+7d) |  | 104d → 98d |
| 13 | **STORM WATER LINE IN ( PH2-G-MCG0 )** |  | 2026-10-14 → 2026-10-21 (+7d) |  |  |
| 4 | **Manholes** |  | 2026-10-14 → 2026-10-21 (+7d) |  |  |
| 4 | **Testing** |  | 2026-10-14 → 2026-10-21 (+7d) |  |  |
| SDR-2-CON-ST-ZA-6070 | Testing for Manholes |  | 2026-10-14 → 2026-10-21 (+7d) |  | 104d → 98d |
| SN | **Sewerage Network** |  | 2027-03-31 → 2027-04-07 (+7d) |  |  |
| ZA | **ZONE A** |  | 2027-03-31 → 2027-04-07 (+7d) |  |  |
| 3 | **LINE 1 ( PH2-A-MCA0 )** |  | 2026-11-22 → 2026-11-07 (-15d) |  |  |
| 7 | **Pipes Work** |  | 2026-11-22 → 2026-11-07 (-15d) |  |  |
| 2 | **Pipes Laying** |  | 2026-10-05 → 2026-10-12 (+7d) |  |  |
| SDR-2-CON-SE-ZA-1010 | 200 mm GRP Pipe Laying |  | 2026-10-05 → 2026-10-12 (+7d) |  | 124d → 118d |
| 3 | **Testing** |  | 2026-10-28 → 2026-10-13 (-15d) |  |  |
| SDR-2-CON-SE-ZA-1020 | Testing of 200 mm GRP Pipe. |  | 2026-10-28 → 2026-10-13 (-15d) |  | 104.1d → 117d |
| 6 | **Backfilling** | 2026-10-28 → 2026-10-14 (-14d) | 2026-11-22 → 2026-11-07 (-15d) |  |  |
| SDR-2-CON-SE-ZA-1430 | Backfilling of 200 mm GRP Pipe. | 2026-10-28 → 2026-10-14 (-14d) | 2026-11-22 → 2026-11-07 (-15d) |  | 104.1d → 117d |
| 4 | **Manholes** |  | 2026-10-29 → 2026-11-05 (+7d) |  |  |
| 3 | **Install Manholes** |  | 2026-10-28 → 2026-10-13 (-15d) |  |  |
| SDR-2-CON-SE-ZA-1040 | Manhole Installation |  | 2026-10-28 → 2026-10-13 (-15d) |  | 159.1d → 172d |
| 4 | **Testing** |  | 2026-10-05 → 2026-10-12 (+7d) |  |  |
| SDR-2-CON-SE-ZA-1050 | Testing |  | 2026-10-05 → 2026-10-12 (+7d) |  | 134d → 128d |
| 5 | **Backfilling** | 2026-10-06 → 2026-10-13 (+7d) | 2026-10-29 → 2026-11-05 (+7d) |  |  |
| SDR-2-CON-SE-ZA-1440 | Backfilling | 2026-10-06 → 2026-10-13 (+7d) | 2026-10-29 → 2026-11-05 (+7d) |  | 134d → 128d |
| 4 | **LINE 2 AND LINE 3 ( PH2-A-MCC0 )** |  | 2027-02-03 → 2027-02-10 (+7d) |  |  |
| 7 | **Pipes Work** |  | 2027-02-03 → 2027-02-10 (+7d) |  |  |
| 2 | **Pipes Laying** |  | 2026-11-08 → 2026-11-15 (+7d) |  |  |
| SDR-2-CON-SE-ZA-1470 | 200 mm GRP Pipe Laying |  | 2026-11-08 → 2026-11-15 (+7d) |  | 105d → 99d |
| 3 | **Testing** |  | 2027-01-10 → 2027-01-17 (+7d) |  |  |
| SDR-2-CON-SE-ZA-1480 | Testing of 200 mm GRP Pipe. |  | 2027-01-10 → 2027-01-17 (+7d) |  | 51d → 45d |
| 6 | **Backfilling** | 2027-01-11 → 2027-01-18 (+7d) | 2027-02-03 → 2027-02-10 (+7d) |  |  |
| SDR-2-CON-SE-ZA-1530 | Backfilling of 200 mm GRP Pipe. | 2027-01-11 → 2027-01-18 (+7d) | 2027-02-03 → 2027-02-10 (+7d) |  | 51d → 45d |
| 4 | **Manholes** |  | 2026-12-02 → 2026-12-09 (+7d) |  |  |
| 3 | **Install Manholes** |  | 2026-10-05 → 2026-10-06 (+1d) |  |  |
| SDR-2-CON-SE-ZA-1500 | Manhole Installation |  | 2026-10-05 → 2026-10-06 A (+1d) | 90% → 100% | 179d → none |
| 4 | **Testing** |  | 2026-11-08 → 2026-11-15 (+7d) |  |  |
| SDR-2-CON-SE-ZA-1510 | Testing |  | 2026-11-08 → 2026-11-15 (+7d) |  | 105d → 99d |
| 5 | **Backfilling** | 2026-11-09 → 2026-11-16 (+7d) | 2026-12-02 → 2026-12-09 (+7d) |  |  |
| SDR-2-CON-SE-ZA-1540 | Backfilling | 2026-11-09 → 2026-11-16 (+7d) | 2026-12-02 → 2026-12-09 (+7d) |  | 105d → 99d |
| 5 | **LINE 4 AND LINE 5 ( PH2-A-MCD0 )** |  | 2027-03-31 → 2027-04-07 (+7d) |  |  |
| 7 | **Pipes Work** |  | 2027-02-03 → 2027-02-10 (+7d) |  |  |
| 2 | **Pipes Laying** |  | 2026-10-05 → 2026-10-12 (+7d) |  |  |
| SDR-2-CON-SE-ZA-1570 | 200 mm GRP Pipe Laying |  | 2026-10-05 → 2026-10-12 (+7d) |  | 134d → 128d |
| 3 | **Testing** |  | 2027-01-10 → 2027-01-17 (+7d) |  |  |
| SDR-2-CON-SE-ZA-1580 | Testing of 200 mm GRP Pipe. |  | 2027-01-10 → 2027-01-17 (+7d) |  | 51d → 45d |
| 6 | **Backfilling** | 2027-01-11 → 2027-01-18 (+7d) | 2027-02-03 → 2027-02-10 (+7d) |  |  |
| SDR-2-CON-SE-ZA-1630 | Backfilling of 200 mm GRP Pipe. | 2027-01-11 → 2027-01-18 (+7d) | 2027-02-03 → 2027-02-10 (+7d) |  | 51d → 45d |
| 4 | **Manholes** |  | 2027-03-31 → 2027-04-07 (+7d) |  |  |
| 3 | **Install Manholes** |  | 2027-01-10 → 2026-10-06 (-96d) |  |  |
| SDR-2-CON-SE-ZA-1600 | Manhole Installation |  | 2027-01-10 → 2026-10-06 A (-96d) | 80% → 100% | 51d → none |

| ID | Task | Start | Finish | Complete | Total float |
| --- | --- | --- | --- | --- | --- |
| 4 | **Testing** |  | 2027-01-11 → 2027-01-18 (+7d) |  |  |
| SDR-2-CON-SE-ZA-1610 | Testing |  | 2027-01-11 → 2027-01-18 (+7d) |  | 51d → 45d |
| 5 | **Backfilling** | 2027-03-03 → 2027-03-15 (+12d) | 2027-03-31 → 2027-04-07 (+7d) |  |  |
| SDR-2-CON-SE-ZA-2690 | Backfilling | 2027-03-03 → 2027-03-15 (+12d) | 2027-03-31 → 2027-04-07 (+7d) |  | 8d → 2d |
| 6 | **LINE 6 AND LINE 7 ( PH2-A-MCE0 )** |  | 2027-02-04 → 2027-02-11 (+7d) |  |  |
| 7 | **Pipes Work** |  | 2027-02-04 → 2027-02-11 (+7d) |  |  |
| 2 | **Pipes Laying** |  | 2026-12-24 → 2026-12-31 (+7d) |  |  |
| SDR-2-CON-SE-ZA-1670 | 200 mm GRP Pipe Laying |  | 2026-12-24 → 2026-12-31 (+7d) | 75% → 85% | 72d → 66d |
| 3 | **Testing** |  | 2027-01-11 → 2027-01-18 (+7d) |  |  |
| SDR-2-CON-SE-ZA-1680 | Testing of 200 mm GRP Pipe. |  | 2027-01-11 → 2027-01-18 (+7d) |  | 57d → 51d |
| 6 | **Backfilling** | 2027-01-12 → 2027-01-19 (+7d) | 2027-02-04 → 2027-02-11 (+7d) |  |  |
| SDR-2-CON-SE-ZA-1730 | Backfilling of 200 mm GRP Pipe. | 2027-01-12 → 2027-01-19 (+7d) | 2027-02-04 → 2027-02-11 (+7d) |  | 57d → 51d |
| 4 | **Manholes** |  | 2027-01-14 → 2027-01-21 (+7d) |  |  |
| 3 | **Install Manholes** |  | 2026-10-05 → 2026-10-06 (+1d) |  |  |
| SDR-2-CON-SE-ZA-1700 | Manhole Installation |  | 2026-10-05 → 2026-10-06 A (+1d) | 75% → 100% | 179d → none |
| 4 | **Testing** |  | 2026-12-15 → 2026-12-22 (+7d) |  |  |
| SDR-2-CON-SE-ZA-1710 | Testing |  | 2026-12-15 → 2026-12-22 (+7d) |  | 75d → 69d |
| 5 | **Backfilling** | 2026-12-22 → 2026-12-29 (+7d) | 2027-01-14 → 2027-01-21 (+7d) |  |  |
| SDR-2-CON-SE-ZA-1740 | Backfilling | 2026-12-22 → 2026-12-29 (+7d) | 2027-01-14 → 2027-01-21 (+7d) |  | 75d → 69d |
| 7 | **LINE 8 AND LINE 9 ( PH2-A-MCF0 )** |  | 2026-11-05 → 2026-11-11 (+6d) |  |  |
| 7 | **Pipes Work** |  | 2026-10-29 → 2026-11-05 (+7d) |  |  |
| 2 | **Pipes Laying** |  | 2026-10-05 → 2026-10-12 (+7d) |  |  |
| SDR-2-CON-SE-ZA-1770 | 200 mm GRP Pipe Laying |  | 2026-10-05 → 2026-10-12 (+7d) |  | 134d → 128d |
| 3 | **Testing** |  | 2026-10-05 → 2026-10-12 (+7d) |  |  |
| SDR-2-CON-SE-ZA-1780 | Testing of 200 mm GRP Pipe. |  | 2026-10-05 → 2026-10-12 (+7d) |  | 134d → 128d |
| 6 | **Backfilling** | 2026-10-06 → 2026-10-13 (+7d) | 2026-10-29 → 2026-11-05 (+7d) |  |  |
| SDR-2-CON-SE-ZA-1830 | Backfilling of 200 mm GRP Pipe. | 2026-10-06 → 2026-10-13 (+7d) | 2026-10-29 → 2026-11-05 (+7d) |  | 134d → 128d |
| 4 | **Manholes** |  | 2026-11-05 → 2026-11-11 (+6d) |  |  |
| 3 | **Install Manholes** |  | 2026-10-05 → 2026-10-06 (+1d) |  |  |
| SDR-2-CON-SE-ZA-1800 | Manhole Installation |  | 2026-10-05 → 2026-10-06 A (+1d) | 75% → 100% | 135d → none |
| 4 | **Testing** |  | 2026-10-06 → 2026-10-12 (+6d) |  |  |
| SDR-2-CON-SE-ZA-1810 | Testing |  | 2026-10-06 → 2026-10-12 (+6d) |  | 135d → 130d |
| 5 | **Backfilling** | 2026-10-17 → 2026-10-22 (+5d) | 2026-11-05 → 2026-11-11 (+6d) |  |  |
| SDR-2-CON-SE-ZA-1840 | Backfilling | 2026-10-17 → 2026-10-22 (+5d) | 2026-11-05 → 2026-11-11 (+6d) |  | 135d → 130d |
| 8 | **LINE 10 AND LINE 11 ( PH2-A-MCG0 )** |  | 2027-01-28 → 2027-02-04 (+7d) |  |  |
| 7 | **Pipes Work** |  | 2027-01-17 → 2027-01-24 (+7d) |  |  |
| 2 | **Pipes Laying** |  | 2026-10-05 → 2026-10-12 (+7d) |  |  |
| SDR-2-CON-SE-ZA-1870 | 200 mm GRP Pipe Laying |  | 2026-10-05 → 2026-10-12 (+7d) |  | 124d → 118d |
| 3 | **Testing** |  | 2026-12-24 → 2026-12-31 (+7d) |  |  |
| SDR-2-CON-SE-ZA-1880 | Testing of 200 mm GRP Pipe. |  | 2026-12-24 → 2026-12-31 (+7d) |  | 56d → 50d |
| 6 | **Backfilling** | 2026-12-24 → 2026-12-31 (+7d) | 2027-01-17 → 2027-01-24 (+7d) |  |  |
| SDR-2-CON-SE-ZA-1930 | Backfilling of 200 mm GRP Pipe. | 2026-12-24 → 2026-12-31 (+7d) | 2027-01-17 → 2027-01-24 (+7d) |  | 56d → 50d |
| 4 | **Manholes** |  | 2027-01-28 → 2027-02-04 (+7d) |  |  |
| 3 | **Install Manholes** |  | 2026-10-05 → 2026-10-06 (+1d) |  |  |
| SDR-2-CON-SE-ZA-1900 | Manhole Installation |  | 2026-10-05 → 2026-10-06 A (+1d) | 75% → 100% | 179d → none |
| 4 | **Testing** |  | 2026-12-24 → 2026-12-31 (+7d) |  |  |
| SDR-2-CON-SE-ZA-1910 | Testing |  | 2026-12-24 → 2026-12-31 (+7d) |  | 56d → 50d |
| 5 | **Backfilling** | 2027-01-05 → 2027-01-12 (+7d) | 2027-01-28 → 2027-02-04 (+7d) |  |  |
| SDR-2-CON-SE-ZA-1940 | Backfilling | 2027-01-05 → 2027-01-12 (+7d) | 2027-01-28 → 2027-02-04 (+7d) |  | 56d → 50d |
| 9 | **LINE 12 AND LINE 13 ( PH2-A-MCH0 )** |  | 2026-11-23 → 2026-11-30 (+7d) |  |  |
| 7 | **Pipes Work** |  | 2026-11-23 → 2026-11-30 (+7d) |  |  |
| 2 | **Pipes Laying** |  | 2026-10-05 → 2026-10-12 (+7d) |  |  |
| SDR-2-CON-SE-ZA-1970 | 200 mm GRP Pipe Laying |  | 2026-10-05 → 2026-10-12 (+7d) | 70% → 85% | 114d → 108d |
| 3 | **Testing** | 2026-10-06 → 2026-10-13 (+7d) | 2026-10-29 → 2026-11-05 (+7d) |  |  |
| SDR-2-CON-SE-ZA-1980 | Testing of 200 mm GRP Pipe. | 2026-10-06 → 2026-10-13 (+7d) | 2026-10-29 → 2026-11-05 (+7d) |  | 114d → 108d |
| 6 | **Backfilling** | 2026-10-31 → 2026-11-07 (+7d) | 2026-11-23 → 2026-11-30 (+7d) |  |  |
| SDR-2-CON-SE-ZA-2030 | Backfilling of 200 mm GRP Pipe. | 2026-10-31 → 2026-11-07 (+7d) | 2026-11-23 → 2026-11-30 (+7d) |  | 114d → 108d |
| 4 | **Manholes** |  | 2026-11-17 → 2026-11-23 (+6d) |  |  |
| 3 | **Install Manholes** |  | 2026-10-05 → 2026-10-06 (+1d) |  |  |
| SDR-2-CON-SE-ZA-2000 | Manhole Installation |  | 2026-10-05 → 2026-10-06 A (+1d) | 70% → 100% | 125d → none |
| 4 | **Testing** | 2026-10-06 → 2026-10-12 (+6d) | 2026-10-29 → 2026-11-04 (+6d) |  |  |
| SDR-2-CON-SE-ZA-2010 | Testing | 2026-10-06 → 2026-10-12 (+6d) | 2026-10-29 → 2026-11-04 (+6d) |  | 125d → 120d |
| 5 | **Backfilling** | 2026-10-31 → 2026-11-05 (+5d) | 2026-11-17 → 2026-11-23 (+6d) |  |  |
| SDR-2-CON-SE-ZA-2040 | Backfilling | 2026-10-31 → 2026-11-05 (+5d) | 2026-11-17 → 2026-11-23 (+6d) |  | 125d → 120d |
| ZG | **ZONE G** |  | 2027-01-03 → 2027-01-10 (+7d) |  |  |
| 3 | **LINE 49 AND LINE 51 ( PH2-G-MCE0 )** |  | 2026-10-14 → 2026-10-21 (+7d) |  |  |
| 4 | **Manholes** |  | 2026-10-14 → 2026-10-21 (+7d) |  |  |
| 4 | **Testing** |  | 2026-10-14 → 2026-10-21 (+7d) |  |  |
| SDR-2-CON-SE-ZA-2110 | Testing |  | 2026-10-14 → 2026-10-21 (+7d) |  | 153d → 147d |
| 4 | **LINE 50 ( PH2-G-MCD0 )** |  | 2027-01-03 → 2027-01-10 (+7d) |  |  |

| ID | Task | Start | Finish | Total float |
| --- | --- | --- | --- | --- |
| 7 | **Pipes Work** |  | 2027-01-03 → 2027-01-10 (+7d) |  |
| 3 | **Testing** |  | 2027-01-03 → 2027-01-10 (+7d) |  |
| SDR-2-CON-SE-ZA-2180 | Testing of 200 mm GRP Pipe. |  | 2027-01-03 → 2027-01-10 (+7d) | 84d → 78d |
| 4 | **Manholes** |  | 2026-10-14 → 2026-10-21 (+7d) |  |
| 4 | **Testing** |  | 2026-10-14 → 2026-10-21 (+7d) |  |
| SDR-2-CON-SE-ZA-2210 | Testing |  | 2026-10-14 → 2026-10-21 (+7d) | 147d → 141d |
| 5 | **LINE 52 AND LINE 53 ( PH2-G-MCF0 )** |  | 2026-10-14 → 2026-10-21 (+7d) |  |
| 4 | **Manholes** |  | 2026-10-14 → 2026-10-21 (+7d) |  |
| 4 | **Testing** |  | 2026-10-14 → 2026-10-21 (+7d) |  |
| SDR-2-CON-SE-ZA-2310 | Testing |  | 2026-10-14 → 2026-10-21 (+7d) | 146d → 140d |
| 6 | **LINE 54 AND LINE 55 ( PH2-G-MCG0 )** |  | 2026-10-14 → 2026-10-21 (+7d) |  |
| 4 | **Manholes** |  | 2026-10-14 → 2026-10-21 (+7d) |  |
| 4 | **Testing** |  | 2026-10-14 → 2026-10-21 (+7d) |  |
| SDR-2-CON-SE-ZA-2410 | Testing |  | 2026-10-14 → 2026-10-21 (+7d) | 159d → 153d |
| TSE | **TSE Network** |  | 2027-05-12 → 2027-05-31 (+19d) |  |
| ZA | **ZONE A** |  | 2027-05-12 → 2027-04-26 (-16d) |  |
| 1 | **TSE NETWORK IN ( PH2-COL-MC10 )** |  | 2027-04-12 → 2027-04-19 (+7d) |  |
| 6 | **Pipes Work** |  | 2027-04-12 → 2027-04-19 (+7d) |  |
| 1 | **Excavation** |  | 2026-12-13 → 2026-12-20 (+7d) |  |
| SDR-2-CON-TS-ZA-1000 | Excavation for TSE HDPE Pipes 225 mm Section 2 |  | 2026-12-13 → 2026-12-20 (+7d) | 8d → 2d |
| SDR-2-CON-TS-ZA-3200 | Excavation for TSE HDPE Pipes 225 mm Section 1 |  | 2026-11-08 → 2026-11-15 (+7d) | 34d → 28d |
| 6 | **bedding Works** | 2026-12-14 → 2026-12-21 (+7d) | 2027-01-06 → 2027-01-13 (+7d) |  |
| SDR-2-CON-TS-ZA-1900 | Sand bedding for TSE HDPE Pipes 225 mm | 2026-12-14 → 2026-12-21 (+7d) | 2027-01-06 → 2027-01-13 (+7d) | 43d → 37d |
| 2 | **Pipes Laying** | 2027-02-01 → 2027-02-08 (+7d) | 2027-02-25 → 2027-03-04 (+7d) |  |
| SDR-2-CON-TS-ZA-1010 | Install TSE 225 mm HDPE Pipe | 2027-02-01 → 2027-02-08 (+7d) | 2027-02-25 → 2027-03-04 (+7d) | 22d → 16d |
| 5 | **Testing** | 2027-02-27 → 2027-03-06 (+7d) | 2027-03-18 → 2027-03-25 (+7d) |  |
| SDR-2-CON-TS-ZA-1080 | Testing of TSE HDPE Pipe 225 mm. | 2027-02-27 → 2027-03-06 (+7d) | 2027-03-18 → 2027-03-25 (+7d) | 22d → 16d |
| 7 | **Backfilling** | 2027-03-20 → 2027-03-27 (+7d) | 2027-04-12 → 2027-04-19 (+7d) |  |
| SDR-2-CON-TS-ZA-1910 | Backfilling of TSE HDPE Pipe 225 mm. | 2027-03-20 → 2027-03-27 (+7d) | 2027-04-12 → 2027-04-19 (+7d) | 22d → 16d |
| 3 | **Valve Chambers & Valves** | 2026-11-16 → 2026-11-23 (+7d) | 2027-04-06 → 2027-04-13 (+7d) |  |
| 3 | **Excavation** | 2026-11-16 → 2026-11-23 (+7d) | 2026-12-31 → 2027-01-07 (+7d) |  |
| SDR-2-CON-TS-ZA-3210 | Excavation for Valve Chambers Section 1 | 2026-11-16 → 2026-11-23 (+7d) | 2026-12-08 → 2026-12-15 (+7d) | 27d → 21d |
| SDR-2-CON-TS-ZA-1040 | Excavation for Valve Chambers Section 2 | 2026-12-09 → 2026-12-16 (+7d) | 2026-12-31 → 2027-01-07 (+7d) | 27d → 21d |
| 1 | **bedding Works** | 2027-01-02 → 2027-01-09 (+7d) | 2027-01-25 → 2027-02-01 (+7d) |  |
| SDR-2-CON-TS-ZA-1020 | Sand bedding for Valve Chambers | 2027-01-02 → 2027-01-09 (+7d) | 2027-01-25 → 2027-02-01 (+7d) | 27d → 21d |
| 4 | **Install Chambers & Valves** | 2027-01-26 → 2027-02-02 (+7d) | 2027-02-18 → 2027-02-27 (+9d) |  |
| SDR-2-CON-TS-ZA-1050 | Valve Chambers & Valves Installation | 2027-01-26 → 2027-02-02 (+7d) | 2027-02-18 → 2027-02-27 (+9d) | 27d → 21d |
| 5 | **Testing** | 2027-02-20 → 2027-02-28 (+8d) | 2027-03-08 → 2027-03-20 (+12d) |  |
| SDR-2-CON-TS-ZA-1060 | Testing Chambers & Valves Installation | 2027-02-20 → 2027-02-28 (+8d) | 2027-03-08 → 2027-03-20 (+12d) | 27d → 21d |
| 6 | **Backfilling** | 2027-03-14 → 2027-03-21 (+7d) | 2027-04-06 → 2027-04-13 (+7d) |  |
| SDR-2-CON-TS-ZA-1070 | Backfilling Chambers & Valves Installation | 2027-03-14 → 2027-03-21 (+7d) | 2027-04-06 → 2027-04-13 (+7d) | 27d → 21d |
| 2 | **TSE NETWORK IN ( PH2-COL-MC20 )** |  | 2027-04-08 → 2027-04-15 (+7d) |  |
| 6 | **Pipes Work** |  | 2027-04-04 → 2027-04-11 (+7d) |  |
| 1 | **Excavation** |  | 2027-01-06 → 2027-01-13 (+7d) |  |
| SDR-2-CON-TS-ZA-3220 | Excavation for TSE HDPE Pipes 225 mm Section 1 |  | 2026-12-14 → 2026-12-21 (+7d) | 29d → 23d |
| SDR-2-CON-TS-ZA-2200 | Excavation for TSE HDPE Pipes 225 mm Section 2 | 2026-12-15 → 2026-12-22 (+7d) | 2027-01-06 → 2027-01-13 (+7d) | 29d → 23d |
| 6 | **bedding Works** | 2027-01-07 → 2027-01-14 (+7d) | 2027-01-31 → 2027-02-07 (+7d) |  |
| SDR-2-CON-TS-ZA-2280 | Sand bedding for TSE HDPE Pipes 225 mm | 2027-01-07 → 2027-01-14 (+7d) | 2027-01-31 → 2027-02-07 (+7d) | 29d → 23d |
| 2 | **Pipes Laying** |  | 2027-02-25 → 2027-03-04 (+7d) |  |
| SDR-2-CON-TS-ZA-2210 | Install TSE 225 mm HDPE Pipe |  | 2027-02-25 → 2027-03-04 (+7d) | 29d → 23d |
| 5 | **Testing** | 2027-02-27 → 2027-03-06 (+7d) | 2027-03-14 → 2027-03-21 (+7d) |  |
| SDR-2-CON-TS-ZA-2270 | Testing of TSE HDPE Pipe 225 mm. | 2027-02-27 → 2027-03-06 (+7d) | 2027-03-14 → 2027-03-21 (+7d) | 29d → 23d |
| 7 | **Backfilling** | 2027-03-15 → 2027-03-22 (+7d) | 2027-04-04 → 2027-04-11 (+7d) |  |
| SDR-2-CON-TS-ZA-2290 | Backfilling of TSE HDPE Pipe 225 mm. | 2027-03-15 → 2027-03-22 (+7d) | 2027-04-04 → 2027-04-11 (+7d) | 29d → 23d |
| 3 | **Valve Chambers & Valves** | 2026-11-22 → 2026-11-29 (+7d) | 2027-04-08 → 2027-04-15 (+7d) |  |
| 3 | **Excavation** | 2026-11-22 → 2026-11-29 (+7d) | 2027-01-06 → 2027-01-13 (+7d) |  |
| SDR-2-CON-TS-ZA-3230 | Excavation for Valve Chambers Section 1 | 2026-11-22 → 2026-11-29 (+7d) | 2026-12-14 → 2026-12-21 (+7d) | 29d → 23d |
| SDR-2-CON-TS-ZA-2230 | Excavation for Valve Chambers Section 2 | 2026-12-15 → 2026-12-22 (+7d) | 2027-01-06 → 2027-01-13 (+7d) | 29d → 23d |
| 1 | **bedding Works** | 2027-01-12 → 2027-01-19 (+7d) | 2027-02-04 → 2027-02-11 (+7d) |  |
| SDR-2-CON-TS-ZA-2220 | Sand bedding for Valve Chambers | 2027-01-12 → 2027-01-19 (+7d) | 2027-02-04 → 2027-02-11 (+7d) | 25d → 19d |
| 4 | **Install Chambers & Valves** | 2027-02-06 → 2027-02-13 (+7d) | 2027-03-02 → 2027-03-14 (+12d) |  |
| SDR-2-CON-TS-ZA-2240 | Valve Chambers & Valves Installation | 2027-02-06 → 2027-02-13 (+7d) | 2027-03-02 → 2027-03-14 (+12d) | 25d → 19d |
| 5 | **Testing** | 2027-03-03 → 2027-03-15 (+12d) | 2027-03-18 → 2027-03-25 (+7d) |  |
| SDR-2-CON-TS-ZA-2250 | Testing Chambers & Valves Installation | 2027-03-03 → 2027-03-15 (+12d) | 2027-03-18 → 2027-03-25 (+7d) | 25d → 19d |
| 6 | **Backfilling** | 2027-03-20 → 2027-03-27 (+7d) | 2027-04-08 → 2027-04-15 (+7d) |  |
| SDR-2-CON-TS-ZA-2260 | Backfilling Chambers & Valves Installation | 2027-03-20 → 2027-03-27 (+7d) | 2027-04-08 → 2027-04-15 (+7d) | 25d → 19d |
| 3 | **TSE NETWORK IN ( PH2-A-MCC0 )** |  | 2027-04-13 → 2027-04-20 (+7d) |  |
| 6 | **Pipes Work** |  | 2027-02-16 → 2027-02-24 (+8d) |  |
| 1 | **Excavation** |  | 2026-12-02 → 2026-12-09 (+7d) |  |
| SDR-2-CON-TS-ZA-1180 | Excavation for TSE HDPE Pipes 125 mm Section 2 | 2026-11-09 → 2026-11-16 (+7d) | 2026-12-02 → 2026-12-09 (+7d) | 64d → 58d |

| ID | Task | Start | Finish | Complete | Total float |
| --- | --- | --- | --- | --- | --- |
| 3 | **bedding Works** | 2026-12-03 → 2026-12-10 (+7d) | 2026-12-27 → 2027-01-03 (+7d) |  |  |
| SDR-2-CON-TS-ZA-1920 | Sand bedding for TSE HDPE Pipes 125 mm | 2026-12-03 → 2026-12-10 (+7d) | 2026-12-27 → 2027-01-03 (+7d) |  | 64d → 58d |
| 2 | **Pipes Laying** | 2026-12-28 → 2027-01-04 (+7d) | 2027-01-20 → 2027-01-27 (+7d) |  |  |
| SDR-2-CON-TS-ZA-1190 | Install TSE 125 mm HDPE Pipe | 2026-12-28 → 2027-01-04 (+7d) | 2027-01-20 → 2027-01-27 (+7d) |  | 64d → 58d |
| 5 | **Testing** | 2027-01-21 → 2027-01-28 (+7d) | 2027-02-01 → 2027-02-08 (+7d) |  |  |
| SDR-2-CON-TS-ZA-1260 | Testing of TSE HDPE Pipe 125 mm. | 2027-01-21 → 2027-01-28 (+7d) | 2027-02-01 → 2027-02-08 (+7d) |  | 64d → 58d |
| 4 | **Backfilling** | 2027-02-02 → 2027-02-09 (+7d) | 2027-02-16 → 2027-02-24 (+8d) |  |  |
| SDR-2-CON-TS-ZA-1930 | Backfilling of TSE HDPE Pipe 125 mm. | 2027-02-02 → 2027-02-09 (+7d) | 2027-02-16 → 2027-02-24 (+8d) |  | 64d → 58d |
| 3 | **Valve Chambers & Valves** | 2026-10-05 → 2026-10-12 (+7d) | 2027-04-13 → 2027-04-20 (+7d) |  |  |
| 3 | **Excavation** | 2026-10-05 → 2026-10-12 (+7d) | 2026-11-18 → 2026-11-25 (+7d) |  |  |
| SDR-2-CON-TS-ZA-3250 | Excavation for Valve Chambers Section 1 | 2026-10-05 → 2026-10-12 (+7d) | 2026-10-28 → 2026-11-04 (+7d) |  | 70.3d → 64.3d |
| SDR-2-CON-TS-ZA-2010 | Excavation for Valve Chambers Section 2 | 2026-10-29 → 2026-11-05 (+7d) | 2026-11-18 → 2026-11-25 (+7d) |  | 70.3d → 64.3d |
| 1 | **bedding Works** | 2026-11-19 → 2026-11-26 (+7d) | 2026-12-13 → 2026-12-20 (+7d) |  |  |
| SDR-2-CON-TS-ZA-2000 | Sand bedding for Valve Chambers | 2026-11-19 → 2026-11-26 (+7d) | 2026-12-13 → 2026-12-20 (+7d) |  | 70.3d → 64.3d |
| 4 | **Install Chambers & Valves** | 2027-02-09 → 2027-02-16 (+7d) | 2027-03-06 → 2027-03-17 (+11d) |  |  |
| SDR-2-CON-TS-ZA-2020 | Valve Chambers & Valves Installation | 2027-02-09 → 2027-02-16 (+7d) | 2027-03-06 → 2027-03-17 (+11d) |  | 21.3d → 15.3d |
| 5 | **Testing** | 2027-03-07 → 2027-03-18 (+11d) | 2027-03-18 → 2027-03-25 (+7d) |  |  |
| SDR-2-CON-TS-ZA-2030 | Testing Chambers & Valves Installation | 2027-03-07 → 2027-03-18 (+11d) | 2027-03-18 → 2027-03-25 (+7d) |  | 21.3d → 15.3d |
| 6 | **Backfilling** | 2027-03-20 → 2027-03-27 (+7d) | 2027-04-13 → 2027-04-20 (+7d) |  |  |
| SDR-2-CON-TS-ZA-2040 | Backfilling Chambers & Valves Installation | 2027-03-20 → 2027-03-27 (+7d) | 2027-04-13 → 2027-04-20 (+7d) |  | 21.3d → 15.3d |
| 4 | **TSE NETWORK IN ( PH2-A-MCD0 )** |  | 2027-04-18 → 2027-04-25 (+7d) |  |  |
| 6 | **Pipes Work** |  | 2027-04-17 → 2027-04-24 (+7d) |  |  |
| 1 | **Excavation** |  | 2026-10-26 → 2026-11-02 (+7d) |  |  |
| SDR-2-CON-TS-ZA-1270 | Excavation for TSE HDPE Pipes 90 mm Section 2 |  | 2026-10-26 → 2026-11-02 (+7d) |  | 90d → 84d |
| 3 | **bedding Works** |  | 2026-11-16 → 2026-11-23 (+7d) |  |  |
| SDR-2-CON-TS-ZA-1940 | Sand bedding for TSE HDPE Pipes 90 mm |  | 2026-11-16 → 2026-11-23 (+7d) |  | 90d → 84d |
| 2 | **Pipes Laying** |  | 2027-03-06 → 2027-03-17 (+11d) |  |  |
| SDR-2-CON-TS-ZA-1280 | Install TSE 90 mm HDPE Pipe |  | 2027-03-06 → 2027-03-17 (+11d) |  | 18d → 12d |
| 5 | **Testing** | 2027-03-07 → 2027-03-18 (+11d) | 2027-03-23 → 2027-03-30 (+7d) |  |  |
| SDR-2-CON-TS-ZA-1350 | Testing of TSE HDPE Pipe 90 mm. | 2027-03-07 → 2027-03-18 (+11d) | 2027-03-23 → 2027-03-30 (+7d) |  | 18d → 12d |
| 4 | **Backfilling** | 2027-03-24 → 2027-03-31 (+7d) | 2027-04-17 → 2027-04-24 (+7d) |  |  |
| SDR-2-CON-TS-ZA-1950 | Backfilling of TSE HDPE Pipe 90 mm. | 2027-03-24 → 2027-03-31 (+7d) | 2027-04-17 → 2027-04-24 (+7d) |  | 18d → 12d |
| 3 | **Valve Chambers & Valves** | 2026-10-05 → 2026-10-12 (+7d) | 2027-04-18 → 2027-04-25 (+7d) |  |  |
| 3 | **Excavation** | 2026-10-05 → 2026-10-12 (+7d) | 2026-11-18 → 2026-11-25 (+7d) |  |  |
| SDR-2-CON-TS-ZA-3270 | Excavation for Valve Chambers Section 1 | 2026-10-05 → 2026-10-12 (+7d) | 2026-10-27 → 2026-11-03 (+7d) |  | 71d → 65d |
| SDR-2-CON-TS-ZA-2060 | Excavation for Valve Chambers Section 2 | 2026-10-28 → 2026-11-04 (+7d) | 2026-11-18 → 2026-11-25 (+7d) |  | 71d → 65d |
| 1 | **bedding Works** | 2026-11-19 → 2026-11-26 (+7d) | 2026-12-07 → 2026-12-14 (+7d) |  |  |
| SDR-2-CON-TS-ZA-2050 | Sand bedding for Valve Chambers | 2026-11-19 → 2026-11-26 (+7d) | 2026-12-07 → 2026-12-14 (+7d) |  | 71d → 65d |
| 4 | **Install Chambers & Valves** | 2027-02-09 → 2027-02-16 (+7d) | 2027-03-06 → 2027-03-17 (+11d) |  |  |
| SDR-2-CON-TS-ZA-2070 | Valve Chambers & Valves Installation | 2027-02-09 → 2027-02-16 (+7d) | 2027-03-06 → 2027-03-17 (+11d) |  | 17d → 11d |
| 5 | **Testing** | 2027-03-07 → 2027-03-18 (+11d) | 2027-03-27 → 2027-04-03 (+7d) |  |  |
| SDR-2-CON-TS-ZA-2080 | Testing Chambers & Valves Installation | 2027-03-07 → 2027-03-18 (+11d) | 2027-03-27 → 2027-04-03 (+7d) |  | 17d → 11d |
| 6 | **Backfilling** | 2027-03-28 → 2027-04-04 (+7d) | 2027-04-18 → 2027-04-25 (+7d) |  |  |
| SDR-2-CON-TS-ZA-2090 | Backfilling Chambers & Valves Installation | 2027-03-28 → 2027-04-04 (+7d) | 2027-04-18 → 2027-04-25 (+7d) |  | 17d → 11d |
| 5 | **TSE NETWORK IN ( PH2-A-MCE0 )** |  | 2027-05-12 → 2027-04-26 (-16d) |  |  |
| 6 | **Pipes Work** |  | 2027-05-12 → 2027-04-26 (-16d) |  |  |
| 1 | **Excavation** |  | 2027-02-25 → 2026-10-08 (-140d) |  |  |
| SDR-2-CON-TS-ZA-2600 | Excavation for TSE HDPE Pipes 90 mm Section 2 | 2027-02-02 → 2026-10-05 A (-120d) | 2027-02-25 → 2026-10-08 A (-140d) | 0% → 100% | 14d → none |
| 3 | **bedding Works** |  | 2027-03-24 → 2027-03-03 (-21d) |  |  |
| SDR-2-CON-TS-ZA-2630 | Sand bedding for TSE HDPE Pipes 90 mm |  | 2027-03-24 → 2027-03-03 (-21d) | 25% → 50% | 14d → 28d |
| 2 | **Pipes Laying** |  | 2027-04-14 → 2027-03-29 (-16d) |  |  |
| SDR-2-CON-TS-ZA-2610 | Install TSE 90 mm HDPE Pipe |  | 2027-04-14 → 2027-03-29 (-16d) | 25% → 50% | 14d → 28d |
| 5 | **Testing** | 2027-04-15 → 2027-03-30 (-16d) | 2027-04-26 → 2027-04-10 (-16d) |  |  |
| SDR-2-CON-TS-ZA-2620 | Testing of TSE HDPE Pipe 90 mm. | 2027-04-15 → 2027-03-30 (-16d) | 2027-04-26 → 2027-04-10 (-16d) |  | 14d → 28d |
| 4 | **Backfilling** | 2027-04-20 → 2027-04-04 (-16d) | 2027-05-12 → 2027-04-26 (-16d) |  |  |
| SDR-2-CON-TS-ZA-2640 | Backfilling of TSE HDPE Pipe 90 mm. | 2027-04-20 → 2027-04-04 (-16d) | 2027-05-12 → 2027-04-26 (-16d) |  | 14d → 28d |
| 3 | **Valve Chambers & Valves** | 2026-10-05 → 2026-10-12 (+7d) | 2027-02-07 → 2027-02-14 (+7d) |  |  |
| 3 | **Excavation** | 2026-10-05 → 2026-10-12 (+7d) | 2026-11-19 → 2026-11-26 (+7d) |  |  |
| SDR-2-CON-TS-ZA-3290 | Excavation for Valve Chambers Section 1 | 2026-10-05 → 2026-10-12 (+7d) | 2026-10-28 → 2026-11-04 (+7d) |  | 72d → 66d |
| SDR-2-CON-TS-ZA-2660 | Excavation for Valve Chambers Section 2 | 2026-10-29 → 2026-11-05 (+7d) | 2026-11-19 → 2026-11-26 (+7d) |  | 72d → 66d |
| 1 | **bedding Works** | 2026-11-21 → 2026-11-28 (+7d) | 2026-12-13 → 2026-12-20 (+7d) |  |  |
| SDR-2-CON-TS-ZA-2650 | Sand bedding for Valve Chambers | 2026-11-21 → 2026-11-28 (+7d) | 2026-12-13 → 2026-12-20 (+7d) |  | 72d → 66d |
| 4 | **Install Chambers & Valves** | 2026-12-14 → 2026-12-21 (+7d) | 2027-01-06 → 2027-01-13 (+7d) |  |  |
| SDR-2-CON-TS-ZA-2670 | Valve Chambers & Valves Installation | 2026-12-14 → 2026-12-21 (+7d) | 2027-01-06 → 2027-01-13 (+7d) |  | 72d → 66d |
| 5 | **Testing** | 2027-01-07 → 2027-01-14 (+7d) | 2027-01-14 → 2027-01-21 (+7d) |  |  |
| SDR-2-CON-TS-ZA-2680 | Testing Chambers & Valves Installation | 2027-01-07 → 2027-01-14 (+7d) | 2027-01-14 → 2027-01-21 (+7d) |  | 72d → 66d |
| 6 | **Backfilling** | 2027-01-16 → 2027-01-23 (+7d) | 2027-02-07 → 2027-02-14 (+7d) |  |  |
| SDR-2-CON-TS-ZA-2690 | Backfilling Chambers & Valves Installation | 2027-01-16 → 2027-01-23 (+7d) | 2027-02-07 → 2027-02-14 (+7d) |  | 72d → 66d |
| 6 | **TSE NETWORK IN ( PH2-A-MCF0 )** |  | 2027-03-24 → 2027-03-31 (+7d) |  |  |
| 6 | **Pipes Work** |  | 2027-02-10 → 2027-01-25 (-16d) |  |  |

| ID | Task | Start | Finish | Complete | Total float |
| --- | --- | --- | --- | --- | --- |
| 1 | **Excavation** |  | 2026-11-19 → 2026-11-03 (-16d) |  |  |
| SDR-2-CON-TS-ZA-3300 | Excavation for TSE HDPE Pipes 90 mm Section 1 | 2026-10-05 A | 2026-10-27 → 2026-10-08 A (-19d) | 0% → 100% | 69d → none |
| SDR-2-CON-TS-ZA-2700 | Excavation for TSE HDPE Pipes 90 mm Section 2 | 2026-10-28 → 2026-10-07 A (-21d) | 2026-11-19 → 2026-11-03 (-16d) | 0% → 50% | 69d → 83d |
| 3 | **bedding Works** | 2026-11-21 → 2026-10-10 (-42d) | 2026-12-13 → 2026-11-26 (-17d) |  |  |
| SDR-2-CON-TS-ZA-2730 | Sand bedding for TSE HDPE Pipes 90 mm | 2026-11-21 → 2026-10-10 A (-42d) | 2026-12-13 → 2026-11-26 (-17d) | 0% → 50% | 69d → 83d |
| 2 | **Pipes Laying** | 2026-12-14 → 2026-10-11 (-64d) | 2027-01-04 → 2026-12-19 (-16d) |  |  |
| SDR-2-CON-TS-ZA-2710 | Install TSE 90 mm HDPE Pipe | 2026-12-14 → 2026-10-11 A (-64d) | 2027-01-04 → 2026-12-19 (-16d) | 0% → 50% | 69d → 83d |
| 5 | **Testing** | 2027-01-05 → 2026-12-20 (-16d) | 2027-01-17 → 2026-12-31 (-17d) |  |  |
| SDR-2-CON-TS-ZA-2720 | Testing of TSE HDPE Pipe 90 mm. | 2027-01-05 → 2026-12-20 (-16d) | 2027-01-17 → 2026-12-31 (-17d) |  | 69d → 83d |
| 4 | **Backfilling** | 2027-01-18 → 2027-01-02 (-16d) | 2027-02-10 → 2027-01-25 (-16d) |  |  |
| SDR-2-CON-TS-ZA-2740 | Backfilling of TSE HDPE Pipe 90 mm. | 2027-01-18 → 2027-01-02 (-16d) | 2027-02-10 → 2027-01-25 (-16d) |  | 69d → 83d |
| 3 | **Valve Chambers & Valves** | 2026-10-05 → 2026-10-12 (+7d) | 2027-03-24 → 2027-03-31 (+7d) |  |  |
| 3 | **Excavation** | 2026-10-05 → 2026-10-12 (+7d) | 2026-12-26 → 2027-01-02 (+7d) |  |  |
| SDR-2-CON-TS-ZA-3310 | Excavation for Valve Chambers Section 1 | 2026-10-05 → 2026-10-12 (+7d) | 2026-10-27 → 2026-11-03 (+7d) |  | 87d → 81d |
| SDR-2-CON-TS-ZA-2760 | Excavation for Valve Chambers Section 2 | 2026-12-03 → 2026-12-10 (+7d) | 2026-12-26 → 2027-01-02 (+7d) |  | 56d → 50d |
| 1 | **bedding Works** | 2026-12-27 → 2027-01-03 (+7d) | 2027-01-16 → 2027-01-23 (+7d) |  |  |
| SDR-2-CON-TS-ZA-2750 | Sand bedding for Valve Chambers | 2026-12-27 → 2027-01-03 (+7d) | 2027-01-16 → 2027-01-23 (+7d) |  | 56d → 50d |
| 4 | **Install Chambers & Valves** | 2027-01-17 → 2027-01-24 (+7d) | 2027-02-09 → 2027-02-16 (+7d) |  |  |
| SDR-2-CON-TS-ZA-2770 | Valve Chambers & Valves Installation | 2027-01-17 → 2027-01-24 (+7d) | 2027-02-09 → 2027-02-16 (+7d) |  | 56d → 50d |
| 5 | **Testing** | 2027-02-10 → 2027-02-17 (+7d) | 2027-02-23 → 2027-03-02 (+7d) |  |  |
| SDR-2-CON-TS-ZA-2780 | Testing Chambers & Valves Installation | 2027-02-10 → 2027-02-17 (+7d) | 2027-02-23 → 2027-03-02 (+7d) |  | 56d → 50d |
| 6 | **Backfilling** | 2027-02-24 → 2027-03-03 (+7d) | 2027-03-24 → 2027-03-31 (+7d) |  |  |
| SDR-2-CON-TS-ZA-2790 | Backfilling Chambers & Valves Installation | 2027-02-24 → 2027-03-03 (+7d) | 2027-03-24 → 2027-03-31 (+7d) |  | 56d → 50d |
| 7 | **TSE NETWORK IN ( PH2-A-MCG0 )** | 2026-10-05 → 2026-10-12 (+7d) | 2027-02-21 → 2027-03-01 (+8d) |  |  |
| 6 | **Pipes Work** | 2026-10-05 → 2026-10-12 (+7d) | 2027-02-10 → 2027-02-17 (+7d) |  |  |
| 1 | **Excavation** | 2026-10-05 → 2026-10-12 (+7d) | 2026-11-19 → 2026-11-26 (+7d) |  |  |
| SDR-2-CON-TS-ZA-3320 | Excavation for TSE HDPE Pipes 90 mm Section 1 | 2026-10-05 → 2026-10-12 (+7d) | 2026-10-27 → 2026-11-03 (+7d) |  | 43d → 37d |
| SDR-2-CON-TS-ZA-2800 | Excavation for TSE HDPE Pipes 90 mm Section 2 | 2026-10-28 → 2026-11-04 (+7d) | 2026-11-19 → 2026-11-26 (+7d) |  | 61d → 55d |
| 3 | **bedding Works** | 2026-11-21 → 2026-11-28 (+7d) | 2026-12-10 → 2026-12-17 (+7d) |  |  |
| SDR-2-CON-TS-ZA-2830 | Sand bedding for TSE HDPE Pipes 90 mm | 2026-11-21 → 2026-11-28 (+7d) | 2026-12-10 → 2026-12-17 (+7d) |  | 61d → 55d |
| 2 | **Pipes Laying** | 2026-12-12 → 2026-12-19 (+7d) | 2027-01-04 → 2027-01-11 (+7d) |  |  |
| SDR-2-CON-TS-ZA-2810 | Install TSE 90 mm HDPE Pipe | 2026-12-12 → 2026-12-19 (+7d) | 2027-01-04 → 2027-01-11 (+7d) |  | 61d → 55d |
| 5 | **Testing** | 2027-01-05 → 2027-01-12 (+7d) | 2027-01-19 → 2027-01-26 (+7d) |  |  |
| SDR-2-CON-TS-ZA-2820 | Testing of TSE HDPE Pipe 90 mm. | 2027-01-05 → 2027-01-12 (+7d) | 2027-01-19 → 2027-01-26 (+7d) |  | 61d → 55d |
| 4 | **Backfilling** | 2027-01-20 → 2027-01-27 (+7d) | 2027-02-10 → 2027-02-17 (+7d) |  |  |
| SDR-2-CON-TS-ZA-2840 | Backfilling of TSE HDPE Pipe 90 mm. | 2027-01-20 → 2027-01-27 (+7d) | 2027-02-10 → 2027-02-17 (+7d) |  | 61d → 55d |
| 3 | **Valve Chambers & Valves** | 2026-10-05 → 2026-10-12 (+7d) | 2027-02-21 → 2027-03-01 (+8d) |  |  |
| 3 | **Excavation** | 2026-10-05 → 2026-10-12 (+7d) | 2026-11-19 → 2026-11-26 (+7d) |  |  |
| SDR-2-CON-TS-ZA-3330 | Excavation for Valve Chambers Section 1 | 2026-10-05 → 2026-10-12 (+7d) | 2026-10-27 → 2026-11-03 (+7d) |  | 60d → 54d |
| SDR-2-CON-TS-ZA-2860 | Excavation for Valve Chambers Section 2 | 2026-10-28 → 2026-11-04 (+7d) | 2026-11-19 → 2026-11-26 (+7d) |  | 60d → 54d |
| 1 | **bedding Works** | 2026-11-21 → 2026-11-28 (+7d) | 2026-12-12 → 2026-12-19 (+7d) |  |  |
| SDR-2-CON-TS-ZA-2850 | Sand bedding for Valve Chambers | 2026-11-21 → 2026-11-28 (+7d) | 2026-12-12 → 2026-12-19 (+7d) |  | 60d → 54d |
| 4 | **Install Chambers & Valves** | 2026-12-13 → 2026-12-20 (+7d) | 2027-01-05 → 2027-01-12 (+7d) |  |  |
| SDR-2-CON-TS-ZA-2870 | Valve Chambers & Valves Installation | 2026-12-13 → 2026-12-20 (+7d) | 2027-01-05 → 2027-01-12 (+7d) |  | 60d → 54d |
| 5 | **Testing** | 2027-01-06 → 2027-01-13 (+7d) | 2027-01-28 → 2027-02-04 (+7d) |  |  |
| SDR-2-CON-TS-ZA-2880 | Testing Chambers & Valves Installation | 2027-01-06 → 2027-01-13 (+7d) | 2027-01-28 → 2027-02-04 (+7d) |  | 60d → 54d |
| 6 | **Backfilling** | 2027-01-30 → 2027-02-06 (+7d) | 2027-02-21 → 2027-03-01 (+8d) |  |  |
| SDR-2-CON-TS-ZA-2890 | Backfilling Chambers & Valves Installation | 2027-01-30 → 2027-02-06 (+7d) | 2027-02-21 → 2027-03-01 (+8d) |  | 60d → 54d |
| 8 | **TSE NETWORK IN ( PH2-A-MCH0 )** | 2026-10-05 → 2026-10-12 (+7d) | 2027-04-07 → 2027-04-14 (+7d) |  |  |
| 6 | **Pipes Work** | 2026-10-05 → 2026-10-12 (+7d) | 2027-04-01 → 2027-04-08 (+7d) |  |  |
| 1 | **Excavation** | 2026-10-05 → 2026-10-12 (+7d) | 2027-01-02 → 2027-01-09 (+7d) |  |  |
| SDR-2-CON-TS-ZA-3340 | Excavation for TSE HDPE Pipes 250 mm Section 1 | 2026-10-05 → 2026-10-12 (+7d) | 2026-10-27 → 2026-11-03 (+7d) |  | 63d → 57d |
| SDR-2-CON-TS-ZA-1630 | Excavation for TSE HDPE Pipes 250 mm Section 2 | 2026-12-10 → 2026-12-17 (+7d) | 2027-01-02 → 2027-01-09 (+7d) |  | 26d → 20d |
| 7 | **bedding Works** | 2027-01-03 → 2027-01-10 (+7d) | 2027-01-26 → 2027-02-02 (+7d) |  |  |
| SDR-2-CON-TS-ZA-1960 | Sand bedding for TSE HDPE Pipes 250 mm | 2027-01-03 → 2027-01-10 (+7d) | 2027-01-26 → 2027-02-02 (+7d) |  | 31d → 25d |
| 2 | **Pipes Laying** | 2027-01-27 → 2027-02-03 (+7d) | 2027-02-20 → 2027-02-28 (+8d) |  |  |
| SDR-2-CON-TS-ZA-1640 | Install TSE 250 mm HDPE Pipe | 2027-01-27 → 2027-02-03 (+7d) | 2027-02-20 → 2027-02-28 (+8d) |  | 31d → 25d |
| 5 | **Testing** | 2027-02-21 → 2027-03-01 (+8d) | 2027-03-16 → 2027-03-23 (+7d) |  |  |
| SDR-2-CON-TS-ZA-1710 | Testing of TSE HDPE Pipe 250 mm. | 2027-02-21 → 2027-03-01 (+8d) | 2027-03-16 → 2027-03-23 (+7d) |  | 31d → 25d |
| 8 | **Backfilling** | 2027-03-17 → 2027-03-24 (+7d) | 2027-04-01 → 2027-04-08 (+7d) |  |  |
| SDR-2-CON-TS-ZA-1970 | Backfilling of TSE HDPE Pipe 250 mm. | 2027-03-17 → 2027-03-24 (+7d) | 2027-04-01 → 2027-04-08 (+7d) |  | 31d → 25d |
| 3 | **Valve Chambers & Valves** | 2026-10-05 → 2026-10-12 (+7d) | 2027-04-07 → 2027-04-14 (+7d) |  |  |
| 3 | **Excavation** | 2026-10-05 → 2026-10-12 (+7d) | 2027-01-02 → 2027-01-09 (+7d) |  |  |
| SDR-2-CON-TS-ZA-3350 | Excavation for Valve Chambers Section 1 | 2026-10-05 → 2026-10-12 (+7d) | 2026-10-27 → 2026-11-03 (+7d) |  | 63d → 57d |
| SDR-2-CON-TS-ZA-2110 | Excavation for Valve Chambers Section 2 | 2026-12-10 → 2026-12-17 (+7d) | 2027-01-02 → 2027-01-09 (+7d) |  | 26d → 20d |
| 1 | **bedding Works** | 2027-01-03 → 2027-01-10 (+7d) | 2027-01-26 → 2027-02-02 (+7d) |  |  |
| SDR-2-CON-TS-ZA-2100 | Sand bedding for Valve Chambers | 2027-01-03 → 2027-01-10 (+7d) | 2027-01-26 → 2027-02-02 (+7d) |  | 26d → 20d |
| 4 | **Install Chambers & Valves** | 2027-01-27 → 2027-02-03 (+7d) | 2027-02-20 → 2027-02-28 (+8d) |  |  |
| SDR-2-CON-TS-ZA-2120 | Valve Chambers & Valves Installation | 2027-01-27 → 2027-02-03 (+7d) | 2027-02-20 → 2027-02-28 (+8d) |  | 26d → 20d |
| 5 | **Testing** | 2027-02-21 → 2027-03-01 (+8d) | 2027-03-15 → 2027-03-22 (+7d) |  |  |

| ID | Task | Start | Finish | Complete | Total float |
| --- | --- | --- | --- | --- | --- |
| SDR-2-CON-TS-ZA-2130 | Testing Chambers & Valves Installation | 2027-02-21 → 2027-03-01 (+8d) | 2027-03-15 → 2027-03-22 (+7d) |  | 26d → 20d |
| 6 | **Backfilling** | 2027-03-16 → 2027-03-23 (+7d) | 2027-04-07 → 2027-04-14 (+7d) |  |  |
| SDR-2-CON-TS-ZA-2140 | Backfilling Chambers & Valves Installation | 2027-03-16 → 2027-03-23 (+7d) | 2027-04-07 → 2027-04-14 (+7d) |  | 26d → 20d |
| 9 | **TSE NETWORK IN ( PH2-ART-MC00 )** |  | 2027-03-18 → 2027-03-25 (+7d) |  |  |
| 6 | **Pipes Work** |  | 2027-02-17 → 2027-02-25 (+8d) |  |  |
| 1 | **Excavation** |  | 2026-11-19 → 2026-11-26 (+7d) |  |  |
| SDR-2-CON-TS-ZA-1720 | Excavation for TSE HDPE Pipes 450 mm Section 2 |  | 2026-11-19 → 2026-11-26 (+7d) |  | 63d → 57d |
| 7 | **bedding Works** | 2026-11-21 → 2026-11-28 (+7d) | 2026-12-14 → 2026-12-21 (+7d) |  |  |
| SDR-2-CON-TS-ZA-1980 | Sand bedding for TSE HDPE Pipes 450 mm | 2026-11-21 → 2026-11-28 (+7d) | 2026-12-14 → 2026-12-21 (+7d) |  | 63d → 57d |
| 2 | **Pipes Laying** | 2026-12-15 → 2026-12-22 (+7d) | 2027-01-07 → 2027-01-14 (+7d) |  |  |
| SDR-2-CON-TS-ZA-1730 | Install TSE 450 mm HDPE Pipe | 2026-12-15 → 2026-12-22 (+7d) | 2027-01-07 → 2027-01-14 (+7d) |  | 63d → 57d |
| 5 | **Testing** | 2027-01-09 → 2027-01-16 (+7d) | 2027-01-25 → 2027-02-01 (+7d) |  |  |
| SDR-2-CON-TS-ZA-1800 | Testing of TSE HDPE Pipe 450 mm. | 2027-01-09 → 2027-01-16 (+7d) | 2027-01-25 → 2027-02-01 (+7d) |  | 63d → 57d |
| 8 | **Backfilling** | 2027-01-26 → 2027-02-02 (+7d) | 2027-02-17 → 2027-02-25 (+8d) |  |  |
| SDR-2-CON-TS-ZA-1990 | Backfilling of TSE HDPE Pipe 450 mm. | 2027-01-26 → 2027-02-02 (+7d) | 2027-02-17 → 2027-02-25 (+8d) |  | 63d → 57d |
| 3 | **Valve Chambers & Valves** | 2026-10-28 → 2026-11-04 (+7d) | 2027-03-18 → 2027-03-25 (+7d) |  |  |
| 3 | **Excavation** | 2026-10-28 → 2026-11-04 (+7d) | 2026-12-13 → 2026-12-20 (+7d) |  |  |
| SDR-2-CON-TS-ZA-3370 | Excavation for Valve Chambers Section 1 | 2026-10-28 → 2026-11-04 (+7d) | 2026-11-19 → 2026-11-26 (+7d) |  | 43d → 37d |
| SDR-2-CON-TS-ZA-2160 | Excavation for Valve Chambers Section 2 | 2026-11-21 → 2026-11-28 (+7d) | 2026-12-13 → 2026-12-20 (+7d) |  | 43d → 37d |
| 1 | **bedding Works** | 2026-12-14 → 2026-12-21 (+7d) | 2027-01-06 → 2027-01-13 (+7d) |  |  |
| SDR-2-CON-TS-ZA-2150 | Sand bedding for Valve Chambers | 2026-12-14 → 2026-12-21 (+7d) | 2027-01-06 → 2027-01-13 (+7d) |  | 43d → 37d |
| 4 | **Install Chambers & Valves** | 2027-01-07 → 2027-01-14 (+7d) | 2027-01-31 → 2027-02-07 (+7d) |  |  |
| SDR-2-CON-TS-ZA-2170 | Valve Chambers & Valves Installation | 2027-01-07 → 2027-01-14 (+7d) | 2027-01-31 → 2027-02-07 (+7d) |  | 43d → 37d |
| 5 | **Testing** | 2027-02-01 → 2027-02-08 (+7d) | 2027-02-17 → 2027-02-25 (+8d) |  |  |
| SDR-2-CON-TS-ZA-2180 | Testing Chambers & Valves Installation | 2027-02-01 → 2027-02-08 (+7d) | 2027-02-17 → 2027-02-25 (+8d) |  | 43d → 37d |
| 6 | **Backfilling** | 2027-02-18 → 2027-02-27 (+9d) | 2027-03-18 → 2027-03-25 (+7d) |  |  |
| SDR-2-CON-TS-ZA-2190 | Backfilling Chambers & Valves Installation | 2027-02-18 → 2027-02-27 (+9d) | 2027-03-18 → 2027-03-25 (+7d) |  | 43d → 37d |
| 10 | **TSE NETWORK IN ( PH2-ART-MC10 )** |  | 2027-03-03 → 2027-03-15 (+12d) |  |  |
| 6 | **Pipes Work** |  | 2026-12-07 → 2026-12-14 (+7d) |  |  |
| 7 | **bedding Works** |  | 2026-12-07 → 2026-12-14 (+7d) |  |  |
| SDR-2-CON-TS-ZA-3130 | Sand bedding for TSE HDPE Pipes 450 mm |  | 2026-12-07 → 2026-12-14 (+7d) | 50% → 75% | 125d → 119d |
| 2 | **Pipes Laying** |  | 2026-12-07 → 2026-12-14 (+7d) |  |  |
| SDR-2-CON-TS-ZA-3110 | Install TSE 450 mm HDPE Pipe |  | 2026-12-07 → 2026-12-14 (+7d) | 50% → 75% | 125d → 119d |
| 5 | **Testing** |  | 2026-12-07 → 2026-12-14 (+7d) |  |  |
| SDR-2-CON-TS-ZA-3120 | Testing of TSE HDPE Pipe 450 mm. |  | 2026-12-07 → 2026-12-14 (+7d) |  | 125d → 119d |
| 8 | **Backfilling** |  | 2026-12-07 → 2026-12-14 (+7d) |  |  |
| SDR-2-CON-TS-ZA-3140 | Backfilling of TSE HDPE Pipe 450 mm. |  | 2026-12-07 → 2026-12-14 (+7d) |  | 125d → 119d |
| 3 | **Valve Chambers & Valves** | 2026-10-28 → 2026-11-04 (+7d) | 2027-03-03 → 2027-03-15 (+12d) |  |  |
| 3 | **Excavation** | 2026-10-28 → 2026-11-04 (+7d) | 2026-12-12 → 2026-12-19 (+7d) |  |  |
| SDR-2-CON-TS-ZA-3390 | Excavation for Valve Chambers Section 1 | 2026-10-28 → 2026-11-04 (+7d) | 2026-11-19 → 2026-11-26 (+7d) |  | 52d → 46d |
| SDR-2-CON-TS-ZA-3160 | Excavation for Valve Chambers Section 2 | 2026-11-21 → 2026-11-28 (+7d) | 2026-12-12 → 2026-12-19 (+7d) |  | 52d → 46d |
| 1 | **bedding Works** | 2026-12-13 → 2026-12-20 (+7d) | 2027-01-02 → 2027-01-09 (+7d) |  |  |
| SDR-2-CON-TS-ZA-3150 | Sand bedding for Valve Chambers | 2026-12-13 → 2026-12-20 (+7d) | 2027-01-02 → 2027-01-09 (+7d) |  | 52d → 46d |
| 4 | **Install Chambers & Valves** | 2027-01-03 → 2027-01-10 (+7d) | 2027-01-26 → 2027-02-02 (+7d) |  |  |
| SDR-2-CON-TS-ZA-3170 | Valve Chambers & Valves Installation | 2027-01-03 → 2027-01-10 (+7d) | 2027-01-26 → 2027-02-02 (+7d) |  | 52d → 46d |
| 5 | **Testing** | 2027-01-27 → 2027-02-03 (+7d) | 2027-02-07 → 2027-02-14 (+7d) |  |  |
| SDR-2-CON-TS-ZA-3180 | Testing Chambers & Valves Installation | 2027-01-27 → 2027-02-03 (+7d) | 2027-02-07 → 2027-02-14 (+7d) |  | 52d → 46d |
| 6 | **Backfilling** | 2027-02-08 → 2027-02-15 (+7d) | 2027-03-03 → 2027-03-15 (+12d) |  |  |
| SDR-2-CON-TS-ZA-3190 | Backfilling Chambers & Valves Installation | 2027-02-08 → 2027-02-15 (+7d) | 2027-03-03 → 2027-03-15 (+12d) |  | 52d → 46d |
| ZG | **ZONE G** |  | 2027-05-12 → 2027-05-31 (+19d) |  |  |
| 1 | **TSE NETWORK IN ( PH2-G-MCA0 )** |  | 2027-02-16 → 2027-02-24 (+8d) |  |  |
| 6 | **Pipes Work** |  | 2026-11-12 → 2026-11-19 (+7d) |  |  |
| 1 | **Excavation** |  | 2026-10-05 → 2026-10-12 (+7d) |  |  |
| SDR-2-CON-TS-ZA-2300 | Excavation for TSE HDPE Pipes 225 mm Section 2 |  | 2026-10-05 → 2026-10-12 (+7d) |  | 84d → 78d |
| SDR-2-CON-TS-ZA-3400 | Excavation for TSE HDPE Pipes 225 mm Section 1 |  | 2026-10-05 → 2026-10-12 (+7d) |  | 64d → 58d |
| 6 | **bedding Works** |  | 2026-10-05 → 2026-10-12 (+7d) |  |  |
| SDR-2-CON-TS-ZA-2380 | Sand bedding for TSE HDPE Pipes 225 mm |  | 2026-10-05 → 2026-10-12 (+7d) |  | 146d → 140d |
| 2 | **Pipes Laying** |  | 2026-10-05 → 2026-10-12 (+7d) |  |  |
| SDR-2-CON-TS-ZA-2310 | Install TSE 225 mm HDPE Pipe |  | 2026-10-05 → 2026-10-12 (+7d) |  | 146d → 140d |
| 5 | **Testing** | 2026-10-06 → 2026-10-13 (+7d) | 2026-10-20 → 2026-10-27 (+7d) |  |  |
| SDR-2-CON-TS-ZA-2370 | Testing of TSE HDPE Pipe 225 mm. | 2026-10-06 → 2026-10-13 (+7d) | 2026-10-20 → 2026-10-27 (+7d) |  | 146d → 140d |
| 7 | **Backfilling** | 2026-10-21 → 2026-10-28 (+7d) | 2026-11-12 → 2026-11-19 (+7d) |  |  |
| SDR-2-CON-TS-ZA-2390 | Backfilling of TSE HDPE Pipe 225 mm. | 2026-10-21 → 2026-10-28 (+7d) | 2026-11-12 → 2026-11-19 (+7d) |  | 146d → 140d |
| 3 | **Valve Chambers & Valves** | 2026-10-05 → 2026-10-12 (+7d) | 2027-02-16 → 2027-02-24 (+8d) |  |  |
| 3 | **Excavation** | 2026-10-05 → 2026-10-12 (+7d) | 2026-11-19 → 2026-11-26 (+7d) |  |  |
| SDR-2-CON-TS-ZA-3410 | Excavation for Valve Chambers Section 1 | 2026-10-05 → 2026-10-12 (+7d) | 2026-10-27 → 2026-11-03 (+7d) |  | 64d → 58d |
| SDR-2-CON-TS-ZA-2330 | Excavation for Valve Chambers Section 2 | 2026-10-28 → 2026-11-04 (+7d) | 2026-11-19 → 2026-11-26 (+7d) |  | 64d → 58d |
| 1 | **bedding Works** | 2026-11-21 → 2026-11-28 (+7d) | 2026-12-14 → 2026-12-21 (+7d) |  |  |
| SDR-2-CON-TS-ZA-2320 | Sand bedding for Valve Chambers | 2026-11-21 → 2026-11-28 (+7d) | 2026-12-14 → 2026-12-21 (+7d) |  | 64d → 58d |
| 4 | **Install Chambers & Valves** | 2026-12-15 → 2026-12-22 (+7d) | 2027-01-07 → 2027-01-14 (+7d) |  |  |

| ID | Task | Start | Finish | Total float |
| --- | --- | --- | --- | --- |
| SDR-2-CON-TS-ZA-2340 | Valve Chambers & Valves Installation | 2026-12-15 → 2026-12-22 (+7d) | 2027-01-07 → 2027-01-14 (+7d) | 64d → 58d |
| 5 | **Testing** | 2027-01-09 → 2027-01-16 (+7d) | 2027-01-23 → 2027-01-30 (+7d) |  |
| SDR-2-CON-TS-ZA-2350 | Testing Chambers & Valves Installation | 2027-01-09 → 2027-01-16 (+7d) | 2027-01-23 → 2027-01-30 (+7d) | 64d → 58d |
| 6 | **Backfilling** | 2027-01-25 → 2027-02-01 (+7d) | 2027-02-16 → 2027-02-24 (+8d) |  |
| SDR-2-CON-TS-ZA-2360 | Backfilling Chambers & Valves Installation | 2027-01-25 → 2027-02-01 (+7d) | 2027-02-16 → 2027-02-24 (+8d) | 64d → 58d |
| 2 | **TSE NETWORK IN ( PH2-G-MCE0 )** |  | 2027-04-19 → 2027-05-04 (+15d) |  |
| 6 | **Pipes Work** |  | 2026-12-29 → 2027-01-05 (+7d) |  |
| 1 | **Excavation** |  | 2026-10-05 → 2026-10-12 (+7d) |  |
| SDR-2-CON-TS-ZA-2400 | Excavation for TSE HDPE Pipes 125 mm Section 2 |  | 2026-10-05 → 2026-10-12 (+7d) | 93d → 87d |
| SDR-2-CON-TS-ZA-3420 | Excavation for TSE HDPE Pipes 125 mm Section 1 |  | 2026-10-05 → 2026-10-12 (+7d) | 93d → 87d |
| 3 | **bedding Works** | 2026-10-06 → 2026-10-13 (+7d) | 2026-10-29 → 2026-11-05 (+7d) |  |
| SDR-2-CON-TS-ZA-2430 | Sand bedding for TSE HDPE Pipes 125 mm | 2026-10-06 → 2026-10-13 (+7d) | 2026-10-29 → 2026-11-05 (+7d) | 106d → 100d |
| 2 | **Pipes Laying** | 2026-10-31 → 2026-11-07 (+7d) | 2026-11-23 → 2026-11-30 (+7d) |  |
| SDR-2-CON-TS-ZA-2410 | Install TSE 125 mm HDPE Pipe | 2026-10-31 → 2026-11-07 (+7d) | 2026-11-23 → 2026-11-30 (+7d) | 106d → 100d |
| 5 | **Testing** | 2026-11-24 → 2026-12-01 (+7d) | 2026-12-05 → 2026-12-12 (+7d) |  |
| SDR-2-CON-TS-ZA-2420 | Testing of TSE HDPE Pipe 125 mm. | 2026-11-24 → 2026-12-01 (+7d) | 2026-12-05 → 2026-12-12 (+7d) | 106d → 100d |
| 4 | **Backfilling** | 2026-12-06 → 2026-12-13 (+7d) | 2026-12-29 → 2027-01-05 (+7d) |  |
| SDR-2-CON-TS-ZA-2440 | Backfilling of TSE HDPE Pipe 125 mm. | 2026-12-06 → 2026-12-13 (+7d) | 2026-12-29 → 2027-01-05 (+7d) | 106d → 100d |
| 3 | **Valve Chambers & Valves** | 2026-10-06 → 2026-10-13 (+7d) | 2027-04-19 → 2027-05-04 (+15d) |  |
| 3 | **Excavation** | 2026-10-06 → 2026-10-13 (+7d) | 2026-11-23 → 2026-11-30 (+7d) |  |
| SDR-2-CON-TS-ZA-3430 | Excavation for Valve Chambers Section 1 | 2026-10-06 → 2026-10-13 (+7d) | 2026-10-29 → 2026-11-05 (+7d) | 64d → 58d |
| SDR-2-CON-TS-ZA-2460 | Excavation for Valve Chambers Section 2 | 2026-10-31 → 2026-11-07 (+7d) | 2026-11-23 → 2026-11-30 (+7d) | 64d → 58d |
| 1 | **bedding Works** | 2026-11-24 → 2026-12-01 (+7d) | 2026-12-17 → 2026-12-24 (+7d) |  |
| SDR-2-CON-TS-ZA-2450 | Sand bedding for Valve Chambers | 2026-11-24 → 2026-12-01 (+7d) | 2026-12-17 → 2026-12-24 (+7d) | 64d → 58d |
| 4 | **Install Chambers & Valves** | 2027-02-13 → 2027-03-01 (+16d) | 2027-03-14 → 2027-03-29 (+15d) |  |
| SDR-2-CON-TS-ZA-2470 | Valve Chambers & Valves Installation | 2027-02-13 → 2027-03-01 (+16d) | 2027-03-14 → 2027-03-29 (+15d) | 16d → 3d |
| 5 | **Testing** | 2027-03-15 → 2027-03-30 (+15d) | 2027-03-24 → 2027-04-08 (+15d) |  |
| SDR-2-CON-TS-ZA-2480 | Testing Chambers & Valves Installation | 2027-03-15 → 2027-03-30 (+15d) | 2027-03-24 → 2027-04-08 (+15d) | 16d → 3d |
| 6 | **Backfilling** | 2027-03-27 → 2027-04-11 (+15d) | 2027-04-19 → 2027-05-04 (+15d) |  |
| SDR-2-CON-TS-ZA-2490 | Backfilling Chambers & Valves Installation | 2027-03-27 → 2027-04-11 (+15d) | 2027-04-19 → 2027-05-04 (+15d) | 16d → 3d |
| 3 | **TSE NETWORK IN ( PH2-G-MCF0 )** |  | 2027-04-21 → 2027-04-28 (+7d) |  |
| 6 | **Pipes Work** |  | 2027-04-06 → 2027-04-21 (+15d) |  |
| 1 | **Excavation** |  | 2026-12-07 → 2026-12-14 (+7d) |  |
| SDR-2-CON-TS-ZA-2900 | Excavation for TSE HDPE Pipes 90 mm Section 2 |  | 2026-12-07 → 2026-12-14 (+7d) | 21d → 15d |
| SDR-2-CON-TS-ZA-3440 | Excavation for TSE HDPE Pipes 90 mm Section 1 |  | 2026-11-07 → 2026-10-12 (-26d) | 32d → 53d |
| 3 | **bedding Works** | 2026-12-20 → 2026-12-27 (+7d) | 2027-01-12 → 2027-01-19 (+7d) |  |
| SDR-2-CON-TS-ZA-2930 | Sand bedding for TSE HDPE Pipes 90 mm | 2026-12-20 → 2026-12-27 (+7d) | 2027-01-12 → 2027-01-19 (+7d) | 32d → 26d |
| 2 | **Pipes Laying** | 2027-01-13 → 2027-01-20 (+7d) | 2027-02-06 → 2027-02-13 (+7d) |  |
| SDR-2-CON-TS-ZA-2910 | Install TSE 90 mm HDPE Pipe | 2027-01-13 → 2027-01-20 (+7d) | 2027-02-06 → 2027-02-13 (+7d) | 32d → 26d |
| 5 | **Testing** | 2027-02-13 → 2027-03-01 (+16d) | 2027-03-08 → 2027-03-28 (+20d) |  |
| SDR-2-CON-TS-ZA-2920 | Testing of TSE HDPE Pipe 90 mm. | 2027-02-13 → 2027-03-01 (+16d) | 2027-03-08 → 2027-03-28 (+20d) | 27d → 14d |
| 4 | **Backfilling** | 2027-03-14 → 2027-03-29 (+15d) | 2027-04-06 → 2027-04-21 (+15d) |  |
| SDR-2-CON-TS-ZA-2940 | Backfilling of TSE HDPE Pipe 90 mm. | 2027-03-14 → 2027-03-29 (+15d) | 2027-04-06 → 2027-04-21 (+15d) | 27d → 14d |
| 3 | **Valve Chambers & Valves** | 2026-11-05 → 2026-10-12 (-24d) | 2027-04-21 → 2027-04-28 (+7d) |  |
| 3 | **Excavation** | 2026-11-05 → 2026-10-12 (-24d) | 2026-12-21 → 2026-11-26 (-25d) |  |
| SDR-2-CON-TS-ZA-3450 | Excavation for Valve Chambers Section 1 | 2026-11-05 → 2026-10-12 (-24d) | 2026-11-28 → 2026-11-03 (-25d) | 32d → 53d |
| SDR-2-CON-TS-ZA-2960 | Excavation for Valve Chambers Section 2 | 2026-11-29 → 2026-11-04 (-25d) | 2026-12-21 → 2026-11-26 (-25d) | 32d → 53d |
| 1 | **bedding Works** | 2027-01-12 → 2027-01-19 (+7d) | 2027-02-01 → 2027-02-08 (+7d) |  |
| SDR-2-CON-TS-ZA-2950 | Sand bedding for Valve Chambers | 2027-01-12 → 2027-01-19 (+7d) | 2027-02-01 → 2027-02-08 (+7d) | 14d → 8d |
| 4 | **Install Chambers & Valves** | 2027-02-02 → 2027-02-09 (+7d) | 2027-02-27 → 2027-03-06 (+7d) |  |
| SDR-2-CON-TS-ZA-2970 | Valve Chambers & Valves Installation | 2027-02-02 → 2027-02-09 (+7d) | 2027-02-27 → 2027-03-06 (+7d) | 14d → 8d |
| 5 | **Testing** | 2027-02-28 → 2027-03-07 (+7d) | 2027-03-27 → 2027-04-03 (+7d) |  |
| SDR-2-CON-TS-ZA-2980 | Testing Chambers & Valves Installation | 2027-02-28 → 2027-03-07 (+7d) | 2027-03-27 → 2027-04-03 (+7d) | 14d → 8d |
| 6 | **Backfilling** | 2027-03-29 → 2027-04-05 (+7d) | 2027-04-21 → 2027-04-28 (+7d) |  |
| SDR-2-CON-TS-ZA-2990 | Backfilling Chambers & Valves Installation | 2027-03-29 → 2027-04-05 (+7d) | 2027-04-21 → 2027-04-28 (+7d) | 14d → 8d |
| 4 | **TSE NETWORK IN ( PH2-G-MCG0 )** |  | 2027-05-11 → 2027-05-24 (+13d) |  |
| 6 | **Pipes Work** |  | 2027-01-17 → 2027-01-24 (+7d) |  |
| 1 | **Excavation** |  | 2026-10-05 → 2026-10-12 (+7d) |  |
| SDR-2-CON-TS-ZA-3000 | Excavation for TSE HDPE Pipes 90 mm Section 2 |  | 2026-10-05 → 2026-10-12 (+7d) | 81d → 75d |
| 3 | **bedding Works** | 2026-10-06 → 2026-10-13 (+7d) | 2026-10-29 → 2026-11-05 (+7d) |  |
| SDR-2-CON-TS-ZA-3030 | Sand bedding for TSE HDPE Pipes 90 mm | 2026-10-06 → 2026-10-13 (+7d) | 2026-10-29 → 2026-11-05 (+7d) | 103d → 97d |
| 2 | **Pipes Laying** | 2026-10-31 → 2026-11-07 (+7d) | 2026-11-23 → 2026-11-30 (+7d) |  |
| SDR-2-CON-TS-ZA-3010 | Install TSE 90 mm HDPE Pipe | 2026-10-31 → 2026-11-07 (+7d) | 2026-11-23 → 2026-11-30 (+7d) | 103d → 97d |
| 5 | **Testing** | 2026-11-24 → 2026-12-01 (+7d) | 2026-12-08 → 2026-12-15 (+7d) |  |
| SDR-2-CON-TS-ZA-3020 | Testing of TSE HDPE Pipe 90 mm. | 2026-11-24 → 2026-12-01 (+7d) | 2026-12-08 → 2026-12-15 (+7d) | 103d → 97d |
| 4 | **Backfilling** | 2026-12-24 → 2026-12-31 (+7d) | 2027-01-17 → 2027-01-24 (+7d) |  |
| SDR-2-CON-TS-ZA-3040 | Backfilling of TSE HDPE Pipe 90 mm. | 2026-12-24 → 2026-12-31 (+7d) | 2027-01-17 → 2027-01-24 (+7d) | 90d → 84d |
| 3 | **Valve Chambers & Valves** | 2026-10-05 → 2026-10-12 (+7d) | 2027-05-11 → 2027-05-24 (+13d) |  |
| 3 | **Excavation** | 2026-10-05 → 2026-10-12 (+7d) | 2026-11-19 → 2026-11-26 (+7d) |  |
| SDR-2-CON-TS-ZA-3470 | Excavation for Valve Chambers Section 1 | 2026-10-05 → 2026-10-12 (+7d) | 2026-10-27 → 2026-11-03 (+7d) | 81d → 75d |

| ID | Task | Start | Finish | Total float | Predecessors |
| --- | --- | --- | --- | --- | --- |
| SDR-2-CON-TS-ZA-3060 | Excavation for Valve Chambers Section 2 | 2026-10-28 → 2026-11-04 (+7d) | 2026-11-19 → 2026-11-26 (+7d) | 81d → 75d |  |
| 1 | **bedding Works** | 2027-01-12 → 2027-01-19 (+7d) | 2027-02-04 → 2027-02-11 (+7d) |  |  |
| SDR-2-CON-TS-ZA-3050 | Sand bedding for Valve Chambers | 2027-01-12 → 2027-01-19 (+7d) | 2027-02-04 → 2027-02-11 (+7d) | 36d → 30d |  |
| 4 | **Install Chambers & Valves** | 2027-03-03 → 2027-03-15 (+12d) | 2027-03-31 → 2027-04-07 (+7d) |  |  |
| SDR-2-CON-TS-ZA-3070 | Valve Chambers & Valves Installation | 2027-03-03 → 2027-03-15 (+12d) | 2027-03-31 → 2027-04-07 (+7d) | 15d → 9d |  |
| 5 | **Testing** | 2027-03-25 → 2027-04-01 (+7d) | 2027-04-15 → 2027-04-22 (+7d) |  |  |
| SDR-2-CON-TS-ZA-3080 | Testing Chambers & Valves Installation | 2027-03-25 → 2027-04-01 (+7d) | 2027-04-15 → 2027-04-22 (+7d) | 15d → 9d |  |
| 6 | **Backfilling** | 2027-04-18 → 2027-04-25 (+7d) | 2027-05-11 → 2027-05-24 (+13d) |  |  |
| SDR-2-CON-TS-ZA-3090 | Backfilling Chambers & Valves Installation | 2027-04-18 → 2027-04-25 (+7d) | 2027-05-11 → 2027-05-24 (+13d) | 15d → 9d |  |
| 5 | **TSE NETWORK IN ( PH2-G-MCZ0 )** |  | 2027-05-12 → 2027-05-31 (+19d) |  |  |
| 6 | **Pipes Work** |  | 2027-05-12 → 2027-05-31 (+19d) |  |  |
| 1 | **Excavation** |  | 2026-10-05 → 2026-10-12 (+7d) |  |  |
| SDR-2-CON-TS-ZA-2500 | Excavation for TSE HDPE Pipes 125 mm Section 2 |  | 2026-10-05 → 2026-10-12 (+7d) | 80d → 74d |  |
| SDR-2-CON-TS-ZA-3480 | Excavation for TSE HDPE Pipes 125 mm Section 1 |  | 2026-10-05 → 2026-10-12 (+7d) | 64d → 58d |  |
| 3 | **bedding Works** | 2027-01-19 → 2027-02-03 (+15d) | 2027-02-11 → 2027-02-28 (+17d) |  |  |
| SDR-2-CON-TS-ZA-2530 | Sand bedding for TSE HDPE Pipes 125 mm | 2027-01-19 → 2027-02-03 (+15d) | 2027-02-11 → 2027-02-28 (+17d) | 8d → 3d |  |
| 2 | **Pipes Laying** | 2027-02-13 → 2027-03-01 (+16d) | 2027-03-14 → 2027-03-29 (+15d) |  |  |
| SDR-2-CON-TS-ZA-2510 | Install TSE 125 mm HDPE Pipe | 2027-02-13 → 2027-03-01 (+16d) | 2027-03-14 → 2027-03-29 (+15d) | 39d → 26d |  |
| 5 | **Testing** | 2027-03-25 → 2027-04-01 (+7d) | 2027-04-03 → 2027-04-10 (+7d) |  |  |
| SDR-2-CON-TS-ZA-2520 | Testing of TSE HDPE Pipe 125 mm. | 2027-03-25 → 2027-04-01 (+7d) | 2027-04-03 → 2027-04-10 (+7d) | 30d → 24d |  |
| 4 | **Backfilling** | 2027-04-22 → 2027-05-05 (+13d) | 2027-05-12 → 2027-05-31 (+19d) |  |  |
| SDR-2-CON-TS-ZA-2540 | Backfilling of TSE HDPE Pipe 125 mm. | 2027-04-22 → 2027-05-05 (+13d) | 2027-05-12 → 2027-05-31 (+19d) | 14d → 3d |  |
| 3 | **Valve Chambers & Valves** | 2026-10-05 → 2026-10-12 (+7d) | 2027-04-15 → 2027-04-22 (+7d) |  |  |
| 3 | **Excavation** | 2026-10-05 → 2026-10-12 (+7d) | 2026-11-19 → 2026-11-26 (+7d) |  |  |
| SDR-2-CON-TS-ZA-3490 | Excavation for Valve Chambers Section 1 | 2026-10-05 → 2026-10-12 (+7d) | 2026-10-27 → 2026-11-03 (+7d) | 64d → 58d |  |
| SDR-2-CON-TS-ZA-2560 | Excavation for Valve Chambers Section 2 | 2026-10-28 → 2026-11-04 (+7d) | 2026-11-19 → 2026-11-26 (+7d) | 64d → 58d |  |
| 1 | **bedding Works** | 2027-01-12 → 2027-01-19 (+7d) | 2027-02-04 → 2027-02-11 (+7d) |  |  |
| SDR-2-CON-TS-ZA-2550 | Sand bedding for Valve Chambers | 2027-01-12 → 2027-01-19 (+7d) | 2027-02-04 → 2027-02-11 (+7d) | 19d → 13d |  |
| 4 | **Install Chambers & Valves** | 2027-02-06 → 2027-02-13 (+7d) | 2027-03-02 → 2027-03-14 (+12d) |  |  |
| SDR-2-CON-TS-ZA-2570 | Valve Chambers & Valves Installation | 2027-02-06 → 2027-02-13 (+7d) | 2027-03-02 → 2027-03-14 (+12d) | 19d → 13d |  |
| 5 | **Testing** | 2027-03-03 → 2027-03-15 (+12d) | 2027-03-24 → 2027-03-31 (+7d) |  |  |
| SDR-2-CON-TS-ZA-2580 | Testing Chambers & Valves Installation | 2027-03-03 → 2027-03-15 (+12d) | 2027-03-24 → 2027-03-31 (+7d) | 19d → 13d |  |
| 6 | **Backfilling** | 2027-03-28 → 2027-04-04 (+7d) | 2027-04-15 → 2027-04-22 (+7d) |  |  |
| SDR-2-CON-TS-ZA-2590 | Backfilling Chambers & Valves Installation | 2027-03-28 → 2027-04-04 (+7d) | 2027-04-15 → 2027-04-22 (+7d) | 19d → 13d |  |
| PW | **Portable Water** |  | 2027-05-15 → 2027-05-27 (+12d) |  |  |
| ZA | **ZONE A** |  | 2027-05-15 → 2027-05-27 (+12d) |  |  |
| 1 | **PORTABLE WATER IN ( PH2-COL-MC10 )** |  | 2027-05-03 → 2027-05-05 (+2d) |  |  |
| 7 | **Pipes Work** |  | 2027-04-04 → 2027-04-11 (+7d) |  |  |
| 1 | **Excavation** |  | 2027-01-11 → 2027-01-18 (+7d) |  |  |
| SDR-2-CON-PW-ZA-3710 | Excavation for PW HDPE Pipes 315 mm Section 1 |  | 2026-12-13 → 2026-12-20 (+7d) | 8d → 2d |  |
| SDR-2-CON-PW-ZA-1000 | Excavation for PW HDPE Pipes 315 mm Section 2 |  | 2027-01-11 → 2027-01-18 (+7d) | 71d → 65d |  |
| 8 | **bedding Works** |  | 2027-02-25 → 2027-03-04 (+7d) |  |  |
| SDR-2-CON-PW-ZA-2200 | Sand bedding for PW HDPE Pipes 315 mm |  | 2027-02-25 → 2027-03-04 (+7d) | 33d → 27d |  |
| 2 | **Pipes Laying** |  | 2027-03-02 → 2027-03-14 (+12d) |  |  |
| SDR-2-CON-PW-ZA-1010 | Install PW 315 mm HDPE Pipe |  | 2027-03-02 → 2027-03-14 (+12d) | 29d → 23d |  |
| 5 | **Testing** | 2027-03-03 → 2027-03-15 (+12d) | 2027-03-15 → 2027-03-22 (+7d) |  |  |
| SDR-2-CON-PW-ZA-1080 | Testing of PW HDPE Pipe 315 mm. | 2027-03-03 → 2027-03-15 (+12d) | 2027-03-15 → 2027-03-22 (+7d) | 29d → 23d |  |
| 9 | **Backfilling** | 2027-03-16 → 2027-03-23 (+7d) | 2027-04-04 → 2027-04-11 (+7d) |  |  |
| SDR-2-CON-PW-ZA-2210 | Backfilling of PW HDPE Pipe 315 mm. | 2027-03-16 → 2027-03-23 (+7d) | 2027-04-04 → 2027-04-11 (+7d) | 29d → 23d |  |
| 3 | **Valve Chambers & Valves & Fire Hydrant** | 2026-12-13 → 2026-12-20 (+7d) | 2027-05-03 → 2027-05-05 (+2d) |  |  |
| 3 | **Excavation** | 2026-12-13 → 2026-12-20 (+7d) | 2027-01-27 → 2027-02-03 (+7d) |  |  |
| SDR-2-CON-PW-ZA-3720 | Excavation for Valve Chambers Section 1 | 2026-12-13 → 2026-12-20 (+7d) | 2027-01-04 → 2027-01-11 (+7d) | 16d → 14d |  |
| SDR-2-CON-PW-ZA-1040 | Excavation for Valve Chambers Section 2 | 2027-01-05 → 2027-01-12 (+7d) | 2027-01-27 → 2027-02-03 (+7d) | 16d → 14d |  |
| 1 | **bedding Works** | 2027-01-28 → 2027-02-04 (+7d) | 2027-02-15 → 2027-02-23 (+8d) |  |  |
| SDR-2-CON-PW-ZA-1020 | Sand bedding for Valve Chambers | 2027-01-28 → 2027-02-04 (+7d) | 2027-02-15 → 2027-02-23 (+8d) | 16d → 14d |  |
| 4 | **Install Chambers & Valves & Fire Hydrant** | 2027-02-16 → 2027-02-24 (+8d) | 2027-03-16 → 2027-03-23 (+7d) |  |  |
| SDR-2-CON-PW-ZA-1050 | Install Chambers & Valves | 2027-02-16 → 2027-02-24 (+8d) | 2027-03-16 → 2027-03-23 (+7d) | 16d → 14d |  |
| 2 | **Testing** | 2027-03-31 → 2027-04-07 (+7d) | 2027-04-08 → 2027-04-15 (+7d) |  |  |
| SDR-2-CON-PW-ZA-1030 | Testing for Chambers & Valves | 2027-03-31 → 2027-04-07 (+7d) | 2027-04-08 → 2027-04-15 (+7d) | 4d → 2d |  |
| 6 | **Backfilling** | 2027-04-10 → 2027-04-12 (+2d) | 2027-05-03 → 2027-05-05 (+2d) |  |  |
| SDR-2-CON-PW-ZA-1070 | Backfilling for Chambers & Valves | 2027-04-10 → 2027-04-12 (+2d) | 2027-05-03 → 2027-05-05 (+2d) | 4d → 2d | SDR-2-CON-RW-ZG-1760 SS+2d, SDR-2-CON-PW-ZA-1030 → SDR-2-CON-RW-ZG-1760 SS+2d, SDR-2-CON-PW-ZA-1030 SS+4d |
| 2 | **PORTABLE WATER IN ( PH2-COL-MC20 )** |  | 2027-04-12 → 2027-04-19 (+7d) |  |  |
| 7 | **Pipes Work** |  | 2027-03-29 → 2027-04-05 (+7d) |  |  |
| 8 | **bedding Works** |  | 2027-01-06 → 2027-01-13 (+7d) |  |  |
| SDR-2-CON-PW-ZA-2340 | Sand bedding for PW HDPE Pipes 315 mm |  | 2027-01-06 → 2027-01-13 (+7d) | 99d → 93d |  |
| 2 | **Pipes Laying** |  | 2027-01-06 → 2027-01-13 (+7d) |  |  |
| SDR-2-CON-PW-ZA-2270 | Install PW 315 mm HDPE Pipe |  | 2027-01-06 → 2027-01-13 (+7d) | 99d → 93d |  |
| 5 | **Testing** |  | 2027-01-28 → 2027-02-04 (+7d) |  |  |
| SDR-2-CON-PW-ZA-2330 | Testing of PW HDPE Pipe 315 mm. |  | 2027-01-28 → 2027-02-04 (+7d) | 80d → 74d |  |
| 9 | **Backfilling** |  | 2027-03-29 → 2027-04-05 (+7d) |  |  |

| ID | Task | Start | Finish | Total float |
| --- | --- | --- | --- | --- |
| SDR-2-CON-PW-ZA-2350 | Backfilling of PW HDPE Pipe 315 mm. |  | 2027-03-29 → 2027-04-05 (+7d) | 34d → 28d |
| 3 | **Valve Chambers & Valves & Fire Hydrant** | 2026-12-14 → 2026-12-21 (+7d) | 2027-04-12 → 2027-04-19 (+7d) |  |
| 3 | **Excavation** | 2026-12-14 → 2026-12-21 (+7d) | 2027-01-31 → 2027-02-07 (+7d) |  |
| SDR-2-CON-PW-ZA-3740 | Excavation for Valve Chambers Section 1 | 2026-12-14 → 2026-12-21 (+7d) | 2027-01-06 → 2027-01-13 (+7d) | 22d → 16d |
| SDR-2-CON-PW-ZA-2300 | Excavation for Valve Chambers Section 2 | 2027-01-07 → 2027-01-14 (+7d) | 2027-01-31 → 2027-02-07 (+7d) | 22d → 16d |
| 1 | **bedding Works** | 2027-02-01 → 2027-02-08 (+7d) | 2027-02-17 → 2027-02-25 (+8d) |  |
| SDR-2-CON-PW-ZA-2280 | Sand bedding for Valve Chambers | 2027-02-01 → 2027-02-08 (+7d) | 2027-02-17 → 2027-02-25 (+8d) | 22d → 16d |
| 4 | **Install Chambers & Valves & Fire Hydrant** | 2027-02-18 → 2027-02-27 (+9d) | 2027-03-08 → 2027-03-20 (+12d) |  |
| SDR-2-CON-PW-ZA-2310 | Install Chambers & Valves | 2027-02-18 → 2027-02-27 (+9d) | 2027-03-08 → 2027-03-20 (+12d) | 22d → 16d |
| 2 | **Testing** | 2027-03-14 → 2027-03-21 (+7d) | 2027-03-21 → 2027-03-28 (+7d) |  |
| SDR-2-CON-PW-ZA-2290 | Testing for Chambers & Valves | 2027-03-14 → 2027-03-21 (+7d) | 2027-03-21 → 2027-03-28 (+7d) | 22d → 16d |
| 6 | **Backfilling** | 2027-03-22 → 2027-03-29 (+7d) | 2027-04-12 → 2027-04-19 (+7d) |  |
| SDR-2-CON-PW-ZA-2320 | Backfilling for Chambers & Valves | 2027-03-22 → 2027-03-29 (+7d) | 2027-04-12 → 2027-04-19 (+7d) | 22d → 16d |
| 11 | **PORTABLE WATER IN ( PH2-A-MCA0 )** | 2026-12-14 → 2026-12-21 (+7d) | 2027-04-29 → 2027-05-06 (+7d) |  |
| 7 | **Pipes Work** | 2026-12-14 → 2026-12-21 (+7d) | 2027-04-28 → 2027-05-05 (+7d) |  |
| 1 | **Excavation** | 2026-12-14 → 2026-12-21 (+7d) | 2027-02-06 → 2027-02-13 (+7d) |  |
| SDR-2-CON-PW-ZA-3750 | Excavation for PW HDPE Pipe 225 mm. Section 1 | 2026-12-14 → 2026-12-21 (+7d) | 2027-01-06 → 2027-01-13 (+7d) | 8d → 2d |
| SDR-2-CON-PW-ZA-1200 | Excavation for PW HDPE Pipe 225 mm. Section 2 | 2027-01-13 → 2027-01-20 (+7d) | 2027-02-06 → 2027-02-13 (+7d) | 9d → 3d |
| 3 | **bedding Works** | 2027-02-07 → 2027-02-14 (+7d) | 2027-03-02 → 2027-03-14 (+12d) |  |
| SDR-2-CON-PW-ZA-2220 | Sand bedding for PW HDPE Pipe 225 mm. | 2027-02-07 → 2027-02-14 (+7d) | 2027-03-02 → 2027-03-14 (+12d) | 9d → 3d |
| 2 | **Pipes Laying** | 2027-03-03 → 2027-03-15 (+12d) | 2027-03-27 → 2027-04-03 (+7d) |  |
| SDR-2-CON-PW-ZA-1210 | Install PW 225 mm HDPE Pipe | 2027-03-03 → 2027-03-15 (+12d) | 2027-03-27 → 2027-04-03 (+7d) | 9d → 3d |
| 5 | **Testing** | 2027-04-01 → 2027-04-08 (+7d) | 2027-04-08 → 2027-04-15 (+7d) |  |
| SDR-2-CON-PW-ZA-1280 | Testing of PW HDPE Pipe 225 mm. | 2027-04-01 → 2027-04-08 (+7d) | 2027-04-08 → 2027-04-15 (+7d) | 8d → 2d |
| 4 | **Backfilling** | 2027-04-10 → 2027-04-17 (+7d) | 2027-04-28 → 2027-05-05 (+7d) |  |
| SDR-2-CON-PW-ZA-2230 | Backfilling of PW HDPE Pipe 225 mm. | 2027-04-10 → 2027-04-17 (+7d) | 2027-04-28 → 2027-05-05 (+7d) | 8d → 2d |
| 3 | **Valve Chambers & Valves & Fire Hydrant** | 2026-12-14 → 2026-12-21 (+7d) | 2027-04-29 → 2027-05-06 (+7d) |  |
| 3 | **Excavation** | 2026-12-14 → 2026-12-21 (+7d) | 2027-01-28 → 2027-02-04 (+7d) |  |
| SDR-2-CON-PW-ZA-3760 | Excavation for Valve Chambers Section 1 | 2026-12-14 → 2026-12-21 (+7d) | 2027-01-05 → 2027-01-12 (+7d) | 14d → 8d |
| SDR-2-CON-PW-ZA-2680 | Excavation for Valve Chambers Section 2 | 2027-01-06 → 2027-01-13 (+7d) | 2027-01-28 → 2027-02-04 (+7d) | 14d → 8d |
| 1 | **bedding Works** | 2027-01-30 → 2027-02-06 (+7d) | 2027-02-21 → 2027-03-01 (+8d) |  |
| SDR-2-CON-PW-ZA-2660 | Sand bedding for Valve Chambers | 2027-01-30 → 2027-02-06 (+7d) | 2027-02-21 → 2027-03-01 (+8d) | 14d → 8d |
| 4 | **Install Chambers & Valves & Fire Hydrant** | 2027-02-23 → 2027-03-02 (+7d) | 2027-03-22 → 2027-03-29 (+7d) |  |
| SDR-2-CON-PW-ZA-2690 | Install Chambers & Valves | 2027-02-23 → 2027-03-02 (+7d) | 2027-03-22 → 2027-03-29 (+7d) | 14d → 8d |
| 2 | **Testing** | 2027-04-04 → 2027-04-11 (+7d) | 2027-04-12 → 2027-04-19 (+7d) |  |
| SDR-2-CON-PW-ZA-2670 | Testing for Chambers & Valves | 2027-04-04 → 2027-04-11 (+7d) | 2027-04-12 → 2027-04-19 (+7d) | 7d → 1d |
| 6 | **Backfilling** | 2027-04-13 → 2027-04-20 (+7d) | 2027-04-29 → 2027-05-06 (+7d) |  |
| SDR-2-CON-PW-ZA-2700 | Backfilling for Chambers & Valves | 2027-04-13 → 2027-04-20 (+7d) | 2027-04-29 → 2027-05-06 (+7d) | 7d → 1d |
| 12 | **PORTABLE WATER IN ( PH2-A-MCB0 )** | 2026-12-17 → 2026-12-24 (+7d) | 2027-05-06 → 2027-05-13 (+7d) |  |
| 7 | **Pipes Work** | 2026-12-17 → 2026-12-24 (+7d) | 2027-05-06 → 2027-05-13 (+7d) |  |
| 1 | **Excavation** | 2026-12-17 → 2026-12-24 (+7d) | 2027-02-03 → 2027-02-10 (+7d) |  |
| SDR-2-CON-PW-ZA-3770 | Excavation for PW HDPE Pipe 225 mm. Section 1 | 2026-12-17 → 2026-12-24 (+7d) | 2027-01-10 → 2027-01-17 (+7d) | 8d → 2d |
| SDR-2-CON-PW-ZA-2710 | Excavation for PW HDPE Pipe 225 mm. Section 2 | 2027-01-11 → 2027-01-18 (+7d) | 2027-02-03 → 2027-02-10 (+7d) | 19d → 58d |
| 3 | **bedding Works** | 2027-02-17 → 2027-03-06 (+17d) | 2027-03-18 → 2027-04-03 (+16d) |  |
| SDR-2-CON-PW-ZA-2740 | Sand bedding for PW HDPE Pipe 225 mm. | 2027-02-17 → 2027-03-06 (+17d) | 2027-03-18 → 2027-04-03 (+16d) | 8d → 40d |
| 2 | **Pipes Laying** | 2027-03-20 → 2027-04-04 (+15d) | 2027-04-11 → 2027-04-26 (+15d) |  |
| SDR-2-CON-PW-ZA-2720 | Install PW 225 mm HDPE Pipe | 2027-03-20 → 2027-04-04 (+15d) | 2027-04-11 → 2027-04-26 (+15d) | 8d → 40d |
| 5 | **Testing** | 2027-04-20 → 2027-04-27 (+7d) | 2027-04-28 → 2027-05-05 (+7d) |  |
| SDR-2-CON-PW-ZA-2730 | Testing of PW HDPE Pipe 225 mm. | 2027-04-20 → 2027-04-27 (+7d) | 2027-04-28 → 2027-05-05 (+7d) | 1d → 40d |
| 4 | **Backfilling** | 2027-04-22 → 2027-04-29 (+7d) | 2027-05-06 → 2027-05-13 (+7d) |  |
| SDR-2-CON-PW-ZA-2750 | Backfilling of PW HDPE Pipe 225 mm. | 2027-04-22 → 2027-04-29 (+7d) | 2027-05-06 → 2027-05-13 (+7d) | 1d → 40d |
| 3 | **Valve Chambers & Valves & Fire Hydrant** | 2026-12-17 → 2026-12-24 (+7d) | 2027-04-19 → 2027-04-26 (+7d) |  |
| 3 | **Excavation** | 2026-12-17 → 2026-12-24 (+7d) | 2027-02-03 → 2027-02-10 (+7d) |  |
| SDR-2-CON-PW-ZA-3780 | Excavation for Valve Chambers Section 1 | 2026-12-17 → 2026-12-24 (+7d) | 2027-01-10 → 2027-01-17 (+7d) | 16d → 10d |
| SDR-2-CON-PW-ZA-2780 | Excavation for Valve Chambers Section 2 | 2027-01-11 → 2027-01-18 (+7d) | 2027-02-03 → 2027-02-10 (+7d) | 16d → 10d |
| 1 | **bedding Works** | 2027-02-04 → 2027-02-11 (+7d) | 2027-02-28 → 2027-03-07 (+7d) |  |
| SDR-2-CON-PW-ZA-2760 | Sand bedding for Valve Chambers | 2027-02-04 → 2027-02-11 (+7d) | 2027-02-28 → 2027-03-07 (+7d) | 16d → 10d |
| 4 | **Install Chambers & Valves & Fire Hydrant** | 2027-03-01 → 2027-03-08 (+7d) | 2027-03-27 → 2027-04-03 (+7d) |  |
| SDR-2-CON-PW-ZA-2790 | Install Chambers & Valves | 2027-03-01 → 2027-03-08 (+7d) | 2027-03-27 → 2027-04-03 (+7d) | 16d → 10d |
| 2 | **Testing** | 2027-03-28 → 2027-04-04 (+7d) | 2027-04-05 → 2027-04-12 (+7d) |  |
| SDR-2-CON-PW-ZA-2770 | Testing for Chambers & Valves | 2027-03-28 → 2027-04-04 (+7d) | 2027-04-05 → 2027-04-12 (+7d) | 16d → 10d |
| 6 | **Backfilling** | 2027-04-06 → 2027-04-13 (+7d) | 2027-04-19 → 2027-04-26 (+7d) |  |
| SDR-2-CON-PW-ZA-2800 | Backfilling for Chambers & Valves | 2027-04-06 → 2027-04-13 (+7d) | 2027-04-19 → 2027-04-26 (+7d) | 16d → 10d |
| 3 | **PORTABLE WATER IN ( PH2-A-MCC0 )** |  | 2027-05-15 → 2027-05-27 (+12d) |  |
| 7 | **Pipes Work** |  | 2027-04-20 → 2027-04-27 (+7d) |  |
| 1 | **Excavation** |  | 2027-02-03 → 2027-02-10 (+7d) |  |
| SDR-2-CON-PW-ZA-1400 | Excavation for PW HDPE Pipe 160 mm. Section 2 |  | 2027-02-03 → 2027-02-10 (+7d) | 15d → 9d |
| 3 | **bedding Works** | 2027-02-04 → 2027-02-11 (+7d) | 2027-02-28 → 2027-03-07 (+7d) |  |
| SDR-2-CON-PW-ZA-2240 | Sand bedding for PW HDPE Pipe 160 mm. | 2027-02-04 → 2027-02-11 (+7d) | 2027-02-28 → 2027-03-07 (+7d) | 15d → 9d |
| 2 | **Pipes Laying** | 2027-03-01 → 2027-03-08 (+7d) | 2027-03-28 → 2027-04-04 (+7d) |  |

| ID | Task | Start | Finish | Complete | Total float |
| --- | --- | --- | --- | --- | --- |
| SDR-2-CON-PW-ZA-1410 | Install PW 160 mm HDPE Pipe | 2027-03-01 → 2027-03-08 (+7d) | 2027-03-28 → 2027-04-04 (+7d) |  | 15d → 9d |
| 5 | **Testing** | 2027-03-29 → 2027-04-05 (+7d) | 2027-04-06 → 2027-04-13 (+7d) |  |  |
| SDR-2-CON-PW-ZA-1480 | Testing of PW HDPE Pipe 160 mm. | 2027-03-29 → 2027-04-05 (+7d) | 2027-04-06 → 2027-04-13 (+7d) |  | 15d → 9d |
| 4 | **Backfilling** | 2027-04-07 → 2027-04-14 (+7d) | 2027-04-20 → 2027-04-27 (+7d) |  |  |
| SDR-2-CON-PW-ZA-2250 | Backfilling of PW HDPE Pipe 160 mm. | 2027-04-07 → 2027-04-14 (+7d) | 2027-04-20 → 2027-04-27 (+7d) |  | 15d → 9d |
| 3 | **Valve Chambers & Valves & Fire Hydrant** | 2027-01-11 → 2027-01-18 (+7d) | 2027-05-15 → 2027-05-27 (+12d) |  |  |
| 3 | **Excavation** | 2027-01-11 → 2027-01-18 (+7d) | 2027-03-01 → 2027-03-08 (+7d) |  |  |
| SDR-2-CON-PW-ZA-3800 | Excavation for Valve Chambers Section 1 | 2027-01-11 → 2027-01-18 (+7d) | 2027-02-03 → 2027-02-10 (+7d) |  | 8d → 2d |
| SDR-2-CON-PW-ZA-3230 | Excavation for Valve Chambers Section 2 | 2027-02-04 → 2027-02-11 (+7d) | 2027-03-01 → 2027-03-08 (+7d) |  | 8d → 2d |
| 1 | **bedding Works** | 2027-03-02 → 2027-03-14 (+12d) | 2027-03-29 → 2027-04-05 (+7d) |  |  |
| SDR-2-CON-PW-ZA-3210 | Sand bedding for Valve Chambers | 2027-03-02 → 2027-03-14 (+12d) | 2027-03-29 → 2027-04-05 (+7d) |  | 8d → 2d |
| 4 | **Install Chambers & Valves & Fire Hydrant** | 2027-03-30 → 2027-04-06 (+7d) | 2027-04-21 → 2027-04-28 (+7d) |  |  |
| SDR-2-CON-PW-ZA-3240 | Install Chambers & Valves | 2027-03-30 → 2027-04-06 (+7d) | 2027-04-21 → 2027-04-28 (+7d) |  | 8d → 2d |
| 2 | **Testing** | 2027-04-22 → 2027-04-29 (+7d) | 2027-04-28 → 2027-05-05 (+7d) |  |  |
| SDR-2-CON-PW-ZA-3220 | Testing for Chambers & Valves | 2027-04-22 → 2027-04-29 (+7d) | 2027-04-28 → 2027-05-05 (+7d) |  | 8d → 2d |
| 6 | **Backfilling** | 2027-04-29 → 2027-05-06 (+7d) | 2027-05-15 → 2027-05-27 (+12d) |  |  |
| SDR-2-CON-PW-ZA-3250 | Backfilling for Chambers & Valves | 2027-04-29 → 2027-05-06 (+7d) | 2027-05-15 → 2027-05-27 (+12d) |  | 12d → 6d |
| 4 | **PORTABLE WATER IN ( PH2-A-MCD0 )** |  | 2027-05-10 → 2027-05-23 (+13d) |  |  |
| 7 | **Pipes Work** |  | 2027-04-27 → 2027-05-04 (+7d) |  |  |
| 1 | **Excavation** |  | 2027-02-15 → 2027-02-23 (+8d) |  |  |
| SDR-2-CON-PW-ZA-3260 | Excavation for PW HDPE Pipe 160 mm. Section 2 |  | 2027-02-15 → 2027-02-23 (+8d) |  | 9d → 3d |
| 3 | **bedding Works** | 2027-02-16 → 2027-02-24 (+8d) | 2027-03-14 → 2027-03-21 (+7d) |  |  |
| SDR-2-CON-PW-ZA-3290 | Sand bedding for PW HDPE Pipe 160 mm. | 2027-02-16 → 2027-02-24 (+8d) | 2027-03-14 → 2027-03-21 (+7d) |  | 9d → 3d |
| 2 | **Pipes Laying** | 2027-03-15 → 2027-03-22 (+7d) | 2027-04-06 → 2027-04-13 (+7d) |  |  |
| SDR-2-CON-PW-ZA-3270 | Install PW 160 mm HDPE Pipe | 2027-03-15 → 2027-03-22 (+7d) | 2027-04-06 → 2027-04-13 (+7d) |  | 9d → 3d |
| 5 | **Testing** | 2027-04-07 → 2027-04-14 (+7d) | 2027-04-15 → 2027-04-22 (+7d) |  |  |
| SDR-2-CON-PW-ZA-3280 | Testing of PW HDPE Pipe 160 mm. | 2027-04-07 → 2027-04-14 (+7d) | 2027-04-15 → 2027-04-22 (+7d) |  | 9d → 3d |
| 4 | **Backfilling** | 2027-04-17 → 2027-04-24 (+7d) | 2027-04-27 → 2027-05-04 (+7d) |  |  |
| SDR-2-CON-PW-ZA-3300 | Backfilling of PW HDPE Pipe 160 mm. | 2027-04-17 → 2027-04-24 (+7d) | 2027-04-27 → 2027-05-04 (+7d) |  | 9d → 3d |
| 3 | **Valve Chambers & Valves & Fire Hydrant** | 2027-01-11 → 2027-01-18 (+7d) | 2027-05-10 → 2027-05-23 (+13d) |  |  |
| 3 | **Excavation** | 2027-01-11 → 2027-01-18 (+7d) | 2027-03-01 → 2027-03-08 (+7d) |  |  |
| SDR-2-CON-PW-ZA-3820 | Excavation for Valve Chambers Section 1 | 2027-01-11 → 2027-01-18 (+7d) | 2027-02-03 → 2027-02-10 (+7d) |  | 8d → 2d |
| SDR-2-CON-PW-ZA-3330 | Excavation for Valve Chambers Section 2 | 2027-02-04 → 2027-02-11 (+7d) | 2027-03-01 → 2027-03-08 (+7d) |  | 8d → 2d |
| 1 | **bedding Works** | 2027-03-02 → 2027-03-14 (+12d) | 2027-03-27 → 2027-04-03 (+7d) |  |  |
| SDR-2-CON-PW-ZA-3310 | Sand bedding for Valve Chambers | 2027-03-02 → 2027-03-14 (+12d) | 2027-03-27 → 2027-04-03 (+7d) |  | 8d → 2d |
| 4 | **Install Chambers & Valves & Fire Hydrant** | 2027-03-28 → 2027-04-04 (+7d) | 2027-04-19 → 2027-04-26 (+7d) |  |  |
| SDR-2-CON-PW-ZA-3340 | Install Chambers & Valves | 2027-03-28 → 2027-04-04 (+7d) | 2027-04-19 → 2027-04-26 (+7d) |  | 8d → 2d |
| 2 | **Testing** | 2027-04-20 → 2027-04-27 (+7d) | 2027-04-28 → 2027-05-05 (+7d) |  |  |
| SDR-2-CON-PW-ZA-3320 | Testing for Chambers & Valves | 2027-04-20 → 2027-04-27 (+7d) | 2027-04-28 → 2027-05-05 (+7d) |  | 8d → 2d |
| 6 | **Backfilling** | 2027-04-29 → 2027-05-06 (+7d) | 2027-05-10 → 2027-05-23 (+13d) |  |  |
| SDR-2-CON-PW-ZA-3350 | Backfilling for Chambers & Valves | 2027-04-29 → 2027-05-06 (+7d) | 2027-05-10 → 2027-05-23 (+13d) |  | 8d → 2d |
| 5 | **PORTABLE WATER IN ( PH2-A-MCE0 )** |  | 2027-05-13 → 2027-05-26 (+13d) |  |  |
| 7 | **Pipes Work** |  | 2027-02-03 → 2027-01-17 (-17d) |  |  |
| 1 | **Excavation** |  | 2026-11-30 → 2026-10-10 (-51d) |  |  |
| SDR-2-CON-PW-ZA-3360 | Excavation for PW HDPE Pipe 160 mm. Section 2 |  | 2026-11-30 → 2026-10-10 A (-51d) | 10% → 100% | 75d → none |
| 3 | **bedding Works** | 2026-12-01 → 2026-10-11 (-51d) | 2026-12-21 → 2026-12-03 (-18d) |  |  |
| SDR-2-CON-PW-ZA-3390 | Sand bedding for PW HDPE Pipe 160 mm. | 2026-12-01 → 2026-10-11 A (-51d) | 2026-12-21 → 2026-12-03 (-18d) | 0% → 50% | 75d → 90d |
| 2 | **Pipes Laying** | 2026-12-22 → 2026-10-11 (-72d) | 2027-01-07 → 2026-12-21 (-17d) |  |  |
| SDR-2-CON-PW-ZA-3370 | Install PW 160 mm HDPE Pipe | 2026-12-22 → 2026-10-11 A (-72d) | 2027-01-07 → 2026-12-21 (-17d) | 0% → 50% | 75d → 90d |
| 5 | **Testing** | 2027-01-09 → 2026-12-22 (-18d) | 2027-01-17 → 2026-12-30 (-18d) |  |  |
| SDR-2-CON-PW-ZA-3380 | Testing of PW HDPE Pipe 160 mm. | 2027-01-09 → 2026-12-22 (-18d) | 2027-01-17 → 2026-12-30 (-18d) |  | 75d → 90d |
| 4 | **Backfilling** | 2027-01-18 → 2026-12-31 (-18d) | 2027-02-03 → 2027-01-17 (-17d) |  |  |
| SDR-2-CON-PW-ZA-3400 | Backfilling of PW HDPE Pipe 160 mm. | 2027-01-18 → 2026-12-31 (-18d) | 2027-02-03 → 2027-01-17 (-17d) |  | 75d → 90d |
| 3 | **Valve Chambers & Valves & Fire Hydrant** | 2026-10-05 → 2026-10-12 (+7d) | 2027-05-13 → 2027-05-26 (+13d) |  |  |
| 3 | **Excavation** | 2026-10-05 → 2026-10-12 (+7d) | 2027-03-02 → 2027-03-14 (+12d) |  |  |
| SDR-2-CON-PW-ZA-3840 | Excavation for Valve Chambers Section 1 | 2026-10-05 → 2026-10-12 (+7d) | 2026-10-27 → 2026-11-03 (+7d) |  | 100d → 94d |
| SDR-2-CON-PW-ZA-3430 | Excavation for Valve Chambers Section 2 | 2027-02-06 → 2027-02-13 (+7d) | 2027-03-02 → 2027-03-14 (+12d) |  | 13.81d → 7.81d |
| 1 | **bedding Works** | 2027-03-02 → 2027-03-14 (+12d) | 2027-03-28 → 2027-04-04 (+7d) |  |  |
| SDR-2-CON-PW-ZA-3410 | Sand bedding for Valve Chambers | 2027-03-02 → 2027-03-14 (+12d) | 2027-03-28 → 2027-04-04 (+7d) |  | 13.81d → 7.81d |
| 4 | **Install Chambers & Valves & Fire Hydrant** | 2027-03-28 → 2027-04-04 (+7d) | 2027-04-17 → 2027-04-24 (+7d) |  |  |
| SDR-2-CON-PW-ZA-3440 | Install Chambers & Valves | 2027-03-28 → 2027-04-04 (+7d) | 2027-04-17 → 2027-04-24 (+7d) |  | 13.81d → 7.81d |
| 2 | **Testing** | 2027-04-17 → 2027-04-24 (+7d) | 2027-04-26 → 2027-05-03 (+7d) |  |  |
| SDR-2-CON-PW-ZA-3420 | Testing for Chambers & Valves | 2027-04-17 → 2027-04-24 (+7d) | 2027-04-26 → 2027-05-03 (+7d) |  | 13.81d → 7.81d |
| 6 | **Backfilling** | 2027-04-26 → 2027-05-03 (+7d) | 2027-05-13 → 2027-05-26 (+13d) |  |  |
| SDR-2-CON-PW-ZA-3450 | Backfilling for Chambers & Valves | 2027-04-26 → 2027-05-03 (+7d) | 2027-05-13 → 2027-05-26 (+13d) |  | 13.81d → 7.81d |
| 6 | **PORTABLE WATER IN ( PH2-A-MCF0 )** | 2026-12-29 → 2026-10-01 (-89d) | 2027-04-27 → 2027-05-04 (+7d) |  |  |
| 7 | **Pipes Work** | 2026-12-29 → 2026-10-01 (-89d) | 2027-04-27 → 2027-04-10 (-17d) |  |  |
| 1 | **Excavation** | 2026-12-29 → 2026-10-01 (-89d) | 2027-02-15 → 2027-01-28 (-18d) |  |  |
| SDR-2-CON-PW-ZA-3850 | Excavation for PW HDPE Pipe 160 mm. Section 1 | 2026-12-29 → 2026-10-01 A (-89d) | 2027-01-21 → 2027-01-06 A (-15d) | 0% → 100% | 4d → none |
| SDR-2-CON-PW-ZA-3460 | Excavation for PW HDPE Pipe 160 mm. Section 2 | 2027-01-23 → 2026-10-06 A (-109d) | 2027-02-15 → 2027-01-28 (-18d) | 0% → 50% | 9d → 24d |

| ID | Task | Start | Finish | Complete | Total float |
| --- | --- | --- | --- | --- | --- |
| 3 | **bedding Works** | 2027-02-16 → 2026-10-07 (-132d) | 2027-03-14 → 2027-02-18 (-24d) |  |  |
| SDR-2-CON-PW-ZA-3490 | Sand bedding for PW HDPE Pipe 160 mm. | 2027-02-16 → 2026-10-07 A (-132d) | 2027-03-14 → 2027-02-18 (-24d) | 0% → 50% | 9d → 24d |
| 2 | **Pipes Laying** | 2027-03-15 → 2026-10-07 (-159d) | 2027-04-06 → 2027-03-20 (-17d) |  |  |
| SDR-2-CON-PW-ZA-3470 | Install PW 160 mm HDPE Pipe | 2027-03-15 → 2026-10-07 A (-159d) | 2027-04-06 → 2027-03-20 (-17d) | 0% → 50% | 9d → 24d |
| 5 | **Testing** | 2027-04-07 → 2027-03-21 (-17d) | 2027-04-13 → 2027-03-27 (-17d) |  |  |
| SDR-2-CON-PW-ZA-3480 | Testing of PW HDPE Pipe 160 mm. | 2027-04-07 → 2027-03-21 (-17d) | 2027-04-13 → 2027-03-27 (-17d) |  | 9d → 24d |
| 4 | **Backfilling** | 2027-04-14 → 2027-03-28 (-17d) | 2027-04-27 → 2027-04-10 (-17d) |  |  |
| SDR-2-CON-PW-ZA-3500 | Backfilling of PW HDPE Pipe 160 mm. | 2027-04-14 → 2027-03-28 (-17d) | 2027-04-27 → 2027-04-10 (-17d) |  | 9d → 24d |
| 3 | **Valve Chambers & Valves & Fire Hydrant** | 2026-12-29 → 2027-01-05 (+7d) | 2027-04-27 → 2027-05-04 (+7d) |  |  |
| 3 | **Excavation** | 2026-12-29 → 2027-01-05 (+7d) | 2027-02-15 → 2027-02-23 (+8d) |  |  |
| SDR-2-CON-PW-ZA-3860 | Excavation for Valve Chambers Section 1 | 2026-12-29 → 2027-01-05 (+7d) | 2027-01-21 → 2027-01-28 (+7d) |  | 9d → 3d |
| SDR-2-CON-PW-ZA-3530 | Excavation for Valve Chambers Section 2 | 2027-01-23 → 2027-01-30 (+7d) | 2027-02-15 → 2027-02-23 (+8d) |  | 9d → 3d |
| 1 | **bedding Works** | 2027-02-16 → 2027-02-24 (+8d) | 2027-03-14 → 2027-03-21 (+7d) |  |  |
| SDR-2-CON-PW-ZA-3510 | Sand bedding for Valve Chambers | 2027-02-16 → 2027-02-24 (+8d) | 2027-03-14 → 2027-03-21 (+7d) |  | 9d → 3d |
| 4 | **Install Chambers & Valves & Fire Hydrant** | 2027-03-15 → 2027-03-22 (+7d) | 2027-04-06 → 2027-04-13 (+7d) |  |  |
| SDR-2-CON-PW-ZA-3540 | Install Chambers & Valves | 2027-03-15 → 2027-03-22 (+7d) | 2027-04-06 → 2027-04-13 (+7d) |  | 9d → 3d |
| 2 | **Testing** | 2027-04-07 → 2027-04-14 (+7d) | 2027-04-14 → 2027-04-21 (+7d) |  |  |
| SDR-2-CON-PW-ZA-3520 | Testing for Chambers & Valves | 2027-04-07 → 2027-04-14 (+7d) | 2027-04-14 → 2027-04-21 (+7d) |  | 9d → 3d |
| 6 | **Backfilling** | 2027-04-15 → 2027-04-22 (+7d) | 2027-04-27 → 2027-05-04 (+7d) |  |  |
| SDR-2-CON-PW-ZA-3550 | Backfilling for Chambers & Valves | 2027-04-15 → 2027-04-22 (+7d) | 2027-04-27 → 2027-05-04 (+7d) |  | 9d → 3d |
| 7 | **PORTABLE WATER IN ( PH2-A-MCG0 )** | 2027-01-02 → 2027-01-05 (+3d) | 2027-05-09 → 2027-05-22 (+13d) |  |  |
| 7 | **Pipes Work** | 2027-01-02 → 2027-01-05 (+3d) | 2027-04-29 → 2027-05-03 (+4d) |  |  |
| 1 | **Excavation** | 2027-01-02 → 2027-01-05 (+3d) | 2027-02-18 → 2027-02-23 (+5d) |  |  |
| SDR-2-CON-PW-ZA-3870 | Excavation for PW HDPE Pipe 160 mm. Section 1 | 2027-01-02 → 2027-01-05 (+3d) | 2027-01-25 → 2027-01-28 (+3d) |  |  |
| SDR-2-CON-PW-ZA-3560 | Excavation for PW HDPE Pipe 160 mm. Section 2 | 2027-01-26 → 2027-01-30 (+4d) | 2027-02-18 → 2027-02-23 (+5d) |  | 7d → 4d |
| 3 | **bedding Works** | 2027-02-20 → 2027-02-24 (+4d) | 2027-03-20 → 2027-03-23 (+3d) |  |  |
| SDR-2-CON-PW-ZA-3590 | Sand bedding for PW HDPE Pipe 160 mm. | 2027-02-20 → 2027-02-24 (+4d) | 2027-03-20 → 2027-03-23 (+3d) |  | 7d → 4d |
| 2 | **Pipes Laying** | 2027-03-21 → 2027-03-24 (+3d) | 2027-04-05 → 2027-04-08 (+3d) |  |  |
| SDR-2-CON-PW-ZA-3570 | Install PW 160 mm HDPE Pipe | 2027-03-21 → 2027-03-24 (+3d) | 2027-04-05 → 2027-04-08 (+3d) |  | 7d → 4d |
| 5 | **Testing** | 2027-04-06 → 2027-04-10 (+4d) | 2027-04-14 → 2027-04-18 (+4d) |  |  |
| SDR-2-CON-PW-ZA-3580 | Testing of PW HDPE Pipe 160 mm. | 2027-04-06 → 2027-04-10 (+4d) | 2027-04-14 → 2027-04-18 (+4d) |  | 7d → 4d |
| 4 | **Backfilling** | 2027-04-15 → 2027-04-19 (+4d) | 2027-04-29 → 2027-05-03 (+4d) |  |  |
| SDR-2-CON-PW-ZA-3600 | Backfilling of PW HDPE Pipe 160 mm. | 2027-04-15 → 2027-04-19 (+4d) | 2027-04-29 → 2027-05-03 (+4d) |  | 7d → 4d |
| 3 | **Valve Chambers & Valves & Fire Hydrant** | 2027-01-11 → 2027-01-18 (+7d) | 2027-05-09 → 2027-05-22 (+13d) |  |  |
| 3 | **Excavation** | 2027-01-11 → 2027-01-18 (+7d) | 2027-03-01 → 2027-03-08 (+7d) |  |  |
| SDR-2-CON-PW-ZA-3880 | Excavation for Valve Chambers Section 1 | 2027-01-11 → 2027-01-18 (+7d) | 2027-02-03 → 2027-02-10 (+7d) |  | 17d → 11d |
| SDR-2-CON-PW-ZA-3630 | Excavation for Valve Chambers Section 2 | 2027-02-04 → 2027-02-11 (+7d) | 2027-03-01 → 2027-03-08 (+7d) |  | 17d → 11d |
| 1 | **bedding Works** | 2027-03-02 → 2027-03-14 (+12d) | 2027-03-29 → 2027-04-05 (+7d) |  |  |
| SDR-2-CON-PW-ZA-3610 | Sand bedding for Valve Chambers | 2027-03-02 → 2027-03-14 (+12d) | 2027-03-29 → 2027-04-05 (+7d) |  | 17d → 11d |
| 4 | **Install Chambers & Valves & Fire Hydrant** | 2027-03-30 → 2027-04-06 (+7d) | 2027-04-18 → 2027-04-25 (+7d) |  |  |
| SDR-2-CON-PW-ZA-3640 | Install Chambers & Valves | 2027-03-30 → 2027-04-06 (+7d) | 2027-04-18 → 2027-04-25 (+7d) |  | 17d → 11d |
| 2 | **Testing** | 2027-04-19 → 2027-04-26 (+7d) | 2027-04-27 → 2027-05-04 (+7d) |  |  |
| SDR-2-CON-PW-ZA-3620 | Testing for Chambers & Valves | 2027-04-19 → 2027-04-26 (+7d) | 2027-04-27 → 2027-05-04 (+7d) |  | 17d → 11d |
| 6 | **Backfilling** | 2027-04-28 → 2027-05-05 (+7d) | 2027-05-09 → 2027-05-22 (+13d) |  |  |
| SDR-2-CON-PW-ZA-3650 | Backfilling for Chambers & Valves | 2027-04-28 → 2027-05-05 (+7d) | 2027-05-09 → 2027-05-22 (+13d) |  | 17d → 11d |
| 8 | **PORTABLE WATER IN ( PH2-A-MCH0 )** | 2027-01-05 → 2027-01-09 (+4d) | 2027-05-02 → 2027-05-05 (+3d) |  |  |
| 7 | **Pipes Work** | 2027-01-05 → 2027-01-09 (+4d) | 2027-05-02 → 2027-05-05 (+3d) |  |  |
| 1 | **Excavation** | 2027-01-05 → 2027-01-09 (+4d) | 2027-02-23 → 2027-02-27 (+4d) |  |  |
| SDR-2-CON-PW-ZA-3890 | Excavation for PW HDPE Pipe 225 mm. Section 1 | 2027-01-05 → 2027-01-09 (+4d) | 2027-01-28 → 2027-02-01 (+4d) |  | 4d → 9d |
| SDR-2-CON-PW-ZA-2810 | Excavation for PW HDPE Pipe 225 mm. Section 2 | 2027-01-30 → 2027-02-02 (+3d) | 2027-02-23 → 2027-02-27 (+4d) |  | 5d → 14d |
| 3 | **bedding Works** | 2027-02-24 → 2027-02-28 (+4d) | 2027-03-23 → 2027-03-27 (+4d) |  |  |
| SDR-2-CON-PW-ZA-2840 | Sand bedding for PW HDPE Pipe 225 mm. | 2027-02-24 → 2027-02-28 (+4d) | 2027-03-23 → 2027-03-27 (+4d) |  | 5d → 14d |
| 2 | **Pipes Laying** | 2027-03-24 → 2027-03-28 (+4d) | 2027-04-10 → 2027-04-13 (+3d) |  |  |
| SDR-2-CON-PW-ZA-2820 | Install PW 225 mm HDPE Pipe | 2027-03-24 → 2027-03-28 (+4d) | 2027-04-10 → 2027-04-13 (+3d) |  | 5d → 14d |
| 5 | **Testing** | 2027-04-11 → 2027-04-14 (+3d) | 2027-04-18 → 2027-04-21 (+3d) |  |  |
| SDR-2-CON-PW-ZA-2830 | Testing of PW HDPE Pipe 225 mm. | 2027-04-11 → 2027-04-14 (+3d) | 2027-04-18 → 2027-04-21 (+3d) |  | 5d → 14d |
| 4 | **Backfilling** | 2027-04-19 → 2027-04-22 (+3d) | 2027-05-02 → 2027-05-05 (+3d) |  |  |
| SDR-2-CON-PW-ZA-2850 | Backfilling of PW HDPE Pipe 225 mm. | 2027-04-19 → 2027-04-22 (+3d) | 2027-05-02 → 2027-05-05 (+3d) |  | 5d → 20d |
| 3 | **Valve Chambers & Valves & Fire Hydrant** | 2027-01-05 → 2027-01-09 (+4d) | 2027-05-02 → 2027-05-05 (+3d) |  |  |
| 3 | **Excavation** | 2027-01-05 → 2027-01-09 (+4d) | 2027-02-23 → 2027-02-27 (+4d) |  |  |
| SDR-2-CON-PW-ZA-3900 | Excavation for Valve Chambers Section 1 | 2027-01-05 → 2027-01-09 (+4d) | 2027-01-28 → 2027-02-01 (+4d) |  | 5d → 14d |
| SDR-2-CON-PW-ZA-2880 | Excavation for Valve Chambers Section 2 | 2027-01-30 → 2027-02-02 (+3d) | 2027-02-23 → 2027-02-27 (+4d) |  | 5d → 14d |
| 1 | **bedding Works** | 2027-02-24 → 2027-02-28 (+4d) | 2027-03-23 → 2027-03-27 (+4d) |  |  |
| SDR-2-CON-PW-ZA-2860 | Sand bedding for Valve Chambers | 2027-02-24 → 2027-02-28 (+4d) | 2027-03-23 → 2027-03-27 (+4d) |  | 5d → 14d |
| 4 | **Install Chambers & Valves & Fire Hydrant** | 2027-03-24 → 2027-03-28 (+4d) | 2027-04-10 → 2027-04-13 (+3d) |  |  |
| SDR-2-CON-PW-ZA-2890 | Install Chambers & Valves | 2027-03-24 → 2027-03-28 (+4d) | 2027-04-10 → 2027-04-13 (+3d) |  | 5d → 14d |
| 2 | **Testing** | 2027-04-11 → 2027-04-14 (+3d) | 2027-04-18 → 2027-04-21 (+3d) |  |  |
| SDR-2-CON-PW-ZA-2870 | Testing for Chambers & Valves | 2027-04-11 → 2027-04-14 (+3d) | 2027-04-18 → 2027-04-21 (+3d) |  | 5d → 14d |
| 6 | **Backfilling** | 2027-04-19 → 2027-04-22 (+3d) | 2027-05-02 → 2027-05-05 (+3d) |  |  |
| SDR-2-CON-PW-ZA-2900 | Backfilling for Chambers & Valves | 2027-04-19 → 2027-04-22 (+3d) | 2027-05-02 → 2027-05-05 (+3d) |  | 5d → 20d |

| ID | Task | Start | Finish | Complete | Total float |
| --- | --- | --- | --- | --- | --- |
| 9 | **PORTABLE WATER IN ( PH2-ART-MC00 )** |  | 2027-05-03 → 2027-05-06 (+3d) |  |  |
| 7 | **Pipes Work** |  | 2027-04-08 → 2027-04-12 (+4d) |  |  |
| 1 | **Excavation** |  | 2027-02-01 → 2027-02-04 (+3d) |  |  |
| SDR-2-CON-PW-ZA-2360 | Excavation for PW HDPE Pipes 315 mm Section 2 |  | 2027-02-01 → 2027-02-04 (+3d) |  | 25d → 22d |
| 8 | **bedding Works** | 2027-02-02 → 2027-02-06 (+4d) | 2027-02-25 → 2027-03-01 (+4d) |  |  |
| SDR-2-CON-PW-ZA-2440 | Sand bedding for PW HDPE Pipes 315 mm | 2027-02-02 → 2027-02-06 (+4d) | 2027-02-25 → 2027-03-01 (+4d) |  | 25d → 22d |
| 2 | **Pipes Laying** | 2027-02-27 → 2027-03-02 (+3d) | 2027-03-22 → 2027-03-25 (+3d) |  |  |
| SDR-2-CON-PW-ZA-2370 | Install PW 315 mm HDPE Pipe | 2027-02-27 → 2027-03-02 (+3d) | 2027-03-22 → 2027-03-25 (+3d) |  | 25d → 22d |
| 5 | **Testing** | 2027-03-23 → 2027-03-27 (+4d) | 2027-03-30 → 2027-04-03 (+4d) |  |  |
| SDR-2-CON-PW-ZA-2430 | Testing of PW HDPE Pipe 315 mm. | 2027-03-23 → 2027-03-27 (+4d) | 2027-03-30 → 2027-04-03 (+4d) |  | 25d → 22d |
| 9 | **Backfilling** | 2027-03-31 → 2027-04-04 (+4d) | 2027-04-08 → 2027-04-12 (+4d) |  |  |
| SDR-2-CON-PW-ZA-2450 | Backfilling of PW HDPE Pipe 315 mm. | 2027-03-31 → 2027-04-04 (+4d) | 2027-04-08 → 2027-04-12 (+4d) |  | 25d → 22d |
| 3 | **Valve Chambers & Valves & Fire Hydrant** | 2027-01-09 → 2027-01-12 (+3d) | 2027-05-03 → 2027-05-06 (+3d) |  |  |
| 3 | **Excavation** | 2027-01-09 → 2027-01-12 (+3d) | 2027-02-27 → 2027-03-02 (+3d) |  |  |
| SDR-2-CON-PW-ZA-3920 | Excavation for Valve Chambers Section 1 | 2027-01-09 → 2027-01-12 (+3d) | 2027-02-01 → 2027-02-04 (+3d) |  | 4d → 9d |
| SDR-2-CON-PW-ZA-2400 | Excavation for Valve Chambers Section 2 | 2027-02-02 → 2027-02-06 (+4d) | 2027-02-27 → 2027-03-02 (+3d) |  | 4d → 9d |
| 1 | **bedding Works** | 2027-02-28 → 2027-03-03 (+3d) | 2027-03-27 → 2027-03-30 (+3d) |  |  |
| SDR-2-CON-PW-ZA-2380 | Sand bedding for Valve Chambers | 2027-02-28 → 2027-03-03 (+3d) | 2027-03-27 → 2027-03-30 (+3d) |  | 4d → 9d |
| 4 | **Install Chambers & Valves & Fire Hydrant** | 2027-03-28 → 2027-03-31 (+3d) | 2027-04-14 → 2027-04-18 (+4d) |  |  |
| SDR-2-CON-PW-ZA-2410 | Install Chambers & Valves | 2027-03-28 → 2027-03-31 (+3d) | 2027-04-14 → 2027-04-18 (+4d) |  | 4d → 9d |
| 2 | **Testing** | 2027-04-15 → 2027-04-19 (+4d) | 2027-04-24 → 2027-04-27 (+3d) |  |  |
| SDR-2-CON-PW-ZA-2390 | Testing for Chambers & Valves | 2027-04-15 → 2027-04-19 (+4d) | 2027-04-24 → 2027-04-27 (+3d) |  | 4d → 9d |
| 6 | **Backfilling** | 2027-04-25 → 2027-04-28 (+3d) | 2027-05-03 → 2027-05-06 (+3d) |  |  |
| SDR-2-CON-PW-ZA-2420 | Backfilling for Chambers & Valves | 2027-04-25 → 2027-04-28 (+3d) | 2027-05-03 → 2027-05-06 (+3d) |  | 4d → 19d |
| 10 | **PORTABLE WATER IN ( PH2-ART-MC10 )** | 2026-10-03 → 2026-09-24 (-9d) | 2027-05-10 → 2027-05-23 (+13d) |  |  |
| 7 | **Pipes Work** | 2026-10-03 → 2026-09-24 (-9d) | 2027-05-10 → 2027-05-23 (+13d) |  |  |
| 1 | **Excavation** | 2027-01-09 → 2026-09-24 (-107d) | 2027-02-01 → 2027-02-04 (+3d) |  |  |
| SDR-2-CON-PW-ZA-3930 | Excavation for PW HDPE Pipes 315 mm Section 1 | 2027-09-24 A → 2026-09-24 A (-365d) | 2027-01-07 → 2027-01-11 (+4d) | 35% → 40% | 25d → 22d |
| SDR-2-CON-PW-ZA-2460 | Excavation for PW HDPE Pipes 315 mm Section 2 | 2027-01-09 → 2026-10-03 A (-98d) | 2027-02-01 → 2027-02-04 (+3d) | 0% → 10% | 35d → 32d |
| 8 | **bedding Works** | 2027-02-02 → 2026-10-03 (-122d) | 2027-02-25 → 2027-03-01 (+4d) |  |  |
| SDR-2-CON-PW-ZA-2540 | Sand bedding for PW HDPE Pipes 315 mm | 2027-02-02 → 2026-10-03 A (-122d) | 2027-02-25 → 2027-03-01 (+4d) | 0% → 20% | 35d → 32d |
| 2 | **Pipes Laying** |  | 2027-03-20 → 2027-03-23 (+3d) |  |  |
| SDR-2-CON-PW-ZA-2470 | Install PW 315 mm HDPE Pipe |  | 2027-03-20 → 2027-03-23 (+3d) | 15% → 20% | 35d → 32d |
| 5 | **Testing** | 2027-03-21 → 2027-03-24 (+3d) | 2027-03-28 → 2027-03-31 (+3d) |  |  |
| SDR-2-CON-PW-ZA-2530 | Testing of PW HDPE Pipe 315 mm. | 2027-03-21 → 2027-03-24 (+3d) | 2027-03-28 → 2027-03-31 (+3d) |  | 35d → 32d |
| 9 | **Backfilling** | 2027-04-29 → 2027-05-06 (+7d) | 2027-05-10 → 2027-05-23 (+13d) |  |  |
| SDR-2-CON-PW-ZA-2550 | Backfilling of PW HDPE Pipe 315 mm. | 2027-04-29 → 2027-05-06 (+7d) | 2027-05-10 → 2027-05-23 (+13d) |  | 16d → 10d |
| 3 | **Valve Chambers & Valves & Fire Hydrant** | 2027-01-05 → 2027-01-12 (+7d) | 2027-05-01 → 2027-05-08 (+7d) |  |  |
| 3 | **Excavation** | 2027-01-05 → 2027-01-12 (+7d) | 2027-02-24 → 2027-03-03 (+7d) |  |  |
| SDR-2-CON-PW-ZA-3940 | Excavation for Valve Chambers Section 1 | 2027-01-05 → 2027-01-12 (+7d) | 2027-01-30 → 2027-02-06 (+7d) |  | 6.74d → 0.74d |
| SDR-2-CON-PW-ZA-2500 | Excavation for Valve Chambers Section 2 | 2027-01-30 → 2027-02-06 (+7d) | 2027-02-24 → 2027-03-03 (+7d) |  | 6.74d → 0.74d |
| 1 | **bedding Works** | 2027-02-24 → 2027-03-03 (+7d) | 2027-03-24 → 2027-03-31 (+7d) |  |  |
| SDR-2-CON-PW-ZA-2480 | Sand bedding for Valve Chambers | 2027-02-24 → 2027-03-03 (+7d) | 2027-03-24 → 2027-03-31 (+7d) |  | 6.74d → 0.74d |
| 4 | **Install Chambers & Valves & Fire Hydrant** | 2027-03-24 → 2027-03-31 (+7d) | 2027-04-10 → 2027-04-17 (+7d) |  |  |
| SDR-2-CON-PW-ZA-2510 | Install Chambers & Valves | 2027-03-24 → 2027-03-31 (+7d) | 2027-04-10 → 2027-04-17 (+7d) |  | 6.74d → 0.74d |
| 2 | **Testing** | 2027-04-10 → 2027-04-17 (+7d) | 2027-04-19 → 2027-04-26 (+7d) |  |  |
| SDR-2-CON-PW-ZA-2490 | Testing for Chambers & Valves | 2027-04-10 → 2027-04-17 (+7d) | 2027-04-19 → 2027-04-26 (+7d) |  | 6.74d → 0.74d |
| 6 | **Backfilling** | 2027-04-19 → 2027-04-26 (+7d) | 2027-05-01 → 2027-05-08 (+7d) |  |  |
| SDR-2-CON-PW-ZA-2520 | Backfilling for Chambers & Valves | 2027-04-19 → 2027-04-26 (+7d) | 2027-05-01 → 2027-05-08 (+7d) |  | 6.74d → 0.74d |
| ZG | **ZONE G** |  | 2027-04-25 → 2027-05-02 (+7d) |  |  |
| 1 | **PORTABLE WATER IN ( PH2-G-MCA0 )** |  | 2027-01-24 → 2027-01-31 (+7d) |  |  |
| 7 | **Pipes Work** |  | 2026-10-31 → 2026-11-07 (+7d) |  |  |
| 3 | **bedding Works** |  | 2026-10-05 → 2026-10-12 (+7d) |  |  |
| SDR-2-CON-PW-ZG-1500 | Sand bedding for PW HDPE Pipes 400 mm |  | 2026-10-05 → 2026-10-12 (+7d) |  | 157d → 151d |
| 2 | **Pipes Laying** |  | 2026-10-05 → 2026-10-12 (+7d) |  |  |
| SDR-2-CON-PW-ZG-1010 | Install PW 400 mm HDPE Pipe |  | 2026-10-05 → 2026-10-12 (+7d) |  | 157d → 151d |
| 5 | **Testing** | 2026-10-06 → 2026-10-13 (+7d) | 2026-10-17 → 2026-10-24 (+7d) |  |  |
| SDR-2-CON-PW-ZG-1080 | Testing of PW HDPE Pipe 400 mm. | 2026-10-06 → 2026-10-13 (+7d) | 2026-10-17 → 2026-10-24 (+7d) |  | 157d → 151d |
| 4 | **Backfilling** | 2026-10-18 → 2026-10-25 (+7d) | 2026-10-31 → 2026-11-07 (+7d) |  |  |
| SDR-2-CON-PW-ZG-1510 | Backfilling of PW HDPE Pipe 400 mm. | 2026-10-18 → 2026-10-25 (+7d) | 2026-10-31 → 2026-11-07 (+7d) |  | 157d → 151d |
| 3 | **Valve Chambers & Valves & Fire Hydrant** | 2026-10-05 → 2026-10-12 (+7d) | 2027-01-24 → 2027-01-31 (+7d) |  |  |
| 3 | **Excavation** | 2026-10-05 → 2026-10-12 (+7d) | 2026-11-22 → 2026-11-29 (+7d) |  |  |
| SDR-2-CON-PW-ZA-3950 | Excavation for Valve Chambers Section 1 | 2026-10-05 → 2026-10-12 (+7d) | 2026-10-28 → 2026-11-04 (+7d) |  | 84d → 78d |
| SDR-2-CON-PW-ZA-3680 | Excavation for Valve Chambers Section 2 | 2026-10-29 → 2026-11-05 (+7d) | 2026-11-22 → 2026-11-29 (+7d) |  | 84d → 78d |
| 1 | **bedding Works** | 2026-11-23 → 2026-11-30 (+7d) | 2026-12-13 → 2026-12-20 (+7d) |  |  |
| SDR-2-CON-PW-ZA-3660 | Sand bedding for Valve Chambers | 2026-11-23 → 2026-11-30 (+7d) | 2026-12-13 → 2026-12-20 (+7d) |  | 84d → 78d |
| 4 | **Install Chambers & Valves & Fire Hydrant** | 2026-12-14 → 2026-12-21 (+7d) | 2026-12-31 → 2027-01-07 (+7d) |  |  |
| SDR-2-CON-PW-ZA-3690 | Install Chambers & Valves | 2026-12-14 → 2026-12-21 (+7d) | 2026-12-31 → 2027-01-07 (+7d) |  | 84d → 78d |
| 2 | **Testing** | 2027-01-02 → 2027-01-09 (+7d) | 2027-01-12 → 2027-01-19 (+7d) |  |  |
| SDR-2-CON-PW-ZA-3670 | Testing for Chambers & Valves | 2027-01-02 → 2027-01-09 (+7d) | 2027-01-12 → 2027-01-19 (+7d) |  | 84d → 78d |

| ID | Task | Start | Finish | Total float |
| --- | --- | --- | --- | --- |
| 6 | **Backfilling** | 2027-01-13 → 2027-01-20 (+7d) | 2027-01-24 → 2027-01-31 (+7d) |  |
| SDR-2-CON-PW-ZA-3700 | Backfilling for Chambers & Valves | 2027-01-13 → 2027-01-20 (+7d) | 2027-01-24 → 2027-01-31 (+7d) | 84d → 78d |
| 2 | **PORTABLE WATER IN ( PH2-G-MCE0 )** |  | 2027-04-25 → 2027-05-02 (+7d) |  |
| 7 | **Pipes Work** |  | 2026-10-28 → 2026-11-04 (+7d) |  |
| 3 | **bedding Works** |  | 2026-10-05 → 2026-10-12 (+7d) |  |
| SDR-2-CON-PW-ZA-2940 | Sand bedding for PW HDPE Pipe 225 mm. |  | 2026-10-05 → 2026-10-12 (+7d) | 159d → 153d |
| 2 | **Pipes Laying** |  | 2026-10-05 → 2026-10-12 (+7d) |  |
| SDR-2-CON-PW-ZA-2920 | Install PW 225 mm HDPE Pipe |  | 2026-10-05 → 2026-10-12 (+7d) | 159d → 153d |
| 5 | **Testing** | 2026-10-06 → 2026-10-13 (+7d) | 2026-10-13 → 2026-10-20 (+7d) |  |
| SDR-2-CON-PW-ZA-2930 | Testing of PW HDPE Pipe 225 mm. | 2026-10-06 → 2026-10-13 (+7d) | 2026-10-13 → 2026-10-20 (+7d) | 159d → 153d |
| 4 | **Backfilling** | 2026-10-14 → 2026-10-21 (+7d) | 2026-10-28 → 2026-11-04 (+7d) |  |
| SDR-2-CON-PW-ZA-2950 | Backfilling of PW HDPE Pipe 225 mm. | 2026-10-14 → 2026-10-21 (+7d) | 2026-10-28 → 2026-11-04 (+7d) | 159d → 153d |
| 3 | **Valve Chambers & Valves & Fire Hydrant** | 2026-12-26 → 2027-01-02 (+7d) | 2027-04-25 → 2027-05-02 (+7d) |  |
| 3 | **Excavation** | 2026-12-26 → 2027-01-02 (+7d) | 2027-02-11 → 2027-02-18 (+7d) |  |
| SDR-2-CON-PW-ZA-3970 | Excavation for Valve Chambers Section 1 | 2026-12-26 → 2027-01-02 (+7d) | 2027-01-18 → 2027-01-25 (+7d) | 23d → 17d |
| SDR-2-CON-PW-ZA-2980 | Excavation for Valve Chambers Section 2 | 2027-01-19 → 2027-01-26 (+7d) | 2027-02-11 → 2027-02-18 (+7d) | 23d → 17d |
| 1 | **bedding Works** | 2027-02-13 → 2027-02-20 (+7d) | 2027-03-06 → 2027-03-17 (+11d) |  |
| SDR-2-CON-PW-ZA-2960 | Sand bedding for Valve Chambers | 2027-02-13 → 2027-02-20 (+7d) | 2027-03-06 → 2027-03-17 (+11d) | 23d → 17d |
| 4 | **Install Chambers & Valves & Fire Hydrant** | 2027-03-07 → 2027-03-18 (+11d) | 2027-03-30 → 2027-04-06 (+7d) |  |
| SDR-2-CON-PW-ZA-2990 | Install Chambers & Valves | 2027-03-07 → 2027-03-18 (+11d) | 2027-03-30 → 2027-04-06 (+7d) | 23d → 17d |
| 2 | **Testing** | 2027-03-31 → 2027-04-07 (+7d) | 2027-04-11 → 2027-04-18 (+7d) |  |
| SDR-2-CON-PW-ZA-2970 | Testing for Chambers & Valves | 2027-03-31 → 2027-04-07 (+7d) | 2027-04-11 → 2027-04-18 (+7d) | 23d → 17d |
| 6 | **Backfilling** | 2027-04-12 → 2027-04-19 (+7d) | 2027-04-25 → 2027-05-02 (+7d) |  |
| SDR-2-CON-PW-ZA-3000 | Backfilling for Chambers & Valves | 2027-04-12 → 2027-04-19 (+7d) | 2027-04-25 → 2027-05-02 (+7d) | 29d → 23d |
| 3 | **PORTABLE WATER IN ( PH2-G-MCF0 )** |  | 2027-04-13 → 2027-04-20 (+7d) |  |
| 7 | **Pipes Work** |  | 2027-01-05 → 2027-01-12 (+7d) |  |
| 3 | **bedding Works** |  | 2026-12-07 → 2026-12-14 (+7d) |  |
| SDR-2-CON-PW-ZA-3040 | Sand bedding for PW HDPE Pipe 225 mm. |  | 2026-12-07 → 2026-12-14 (+7d) | 100d → 94d |
| 5 | **Testing** | 2026-12-07 → 2026-12-14 (+7d) | 2026-12-15 → 2026-12-22 (+7d) |  |
| SDR-2-CON-PW-ZA-3030 | Testing of PW HDPE Pipe 225 mm. | 2026-12-07 → 2026-12-14 (+7d) | 2026-12-15 → 2026-12-22 (+7d) | 100d → 94d |
| 4 | **Backfilling** | 2026-12-16 → 2026-12-23 (+7d) | 2027-01-05 → 2027-01-12 (+7d) |  |
| SDR-2-CON-PW-ZA-3050 | Backfilling of PW HDPE Pipe 225 mm. | 2026-12-16 → 2026-12-23 (+7d) | 2027-01-05 → 2027-01-12 (+7d) | 100d → 94d |
| 3 | **Valve Chambers & Valves & Fire Hydrant** | 2026-12-07 → 2026-12-14 (+7d) | 2027-04-13 → 2027-04-20 (+7d) |  |
| 3 | **Excavation** | 2026-12-07 → 2026-12-14 (+7d) | 2027-01-24 → 2027-01-31 (+7d) |  |
| SDR-2-CON-PW-ZA-3990 | Excavation for Valve Chambers Section 1 | 2026-12-07 → 2026-12-14 (+7d) | 2026-12-30 → 2027-01-06 (+7d) | 21d → 15d |
| SDR-2-CON-PW-ZA-3080 | Excavation for Valve Chambers Section 2 | 2026-12-31 → 2027-01-07 (+7d) | 2027-01-24 → 2027-01-31 (+7d) | 21d → 15d |
| 1 | **bedding Works** | 2027-01-25 → 2027-02-01 (+7d) | 2027-02-16 → 2027-02-24 (+8d) |  |
| SDR-2-CON-PW-ZA-3060 | Sand bedding for Valve Chambers | 2027-01-25 → 2027-02-01 (+7d) | 2027-02-16 → 2027-02-24 (+8d) | 21d → 15d |
| 4 | **Install Chambers & Valves & Fire Hydrant** | 2027-02-17 → 2027-02-25 (+8d) | 2027-03-16 → 2027-03-23 (+7d) |  |
| SDR-2-CON-PW-ZA-3090 | Install Chambers & Valves | 2027-02-17 → 2027-02-25 (+8d) | 2027-03-16 → 2027-03-23 (+7d) | 21d → 15d |
| 2 | **Testing** | 2027-03-17 → 2027-03-24 (+7d) | 2027-03-25 → 2027-04-01 (+7d) |  |
| SDR-2-CON-PW-ZA-3070 | Testing for Chambers & Valves | 2027-03-17 → 2027-03-24 (+7d) | 2027-03-25 → 2027-04-01 (+7d) | 21d → 15d |
| 6 | **Backfilling** | 2027-03-27 → 2027-04-03 (+7d) | 2027-04-13 → 2027-04-20 (+7d) |  |
| SDR-2-CON-PW-ZA-3100 | Backfilling for Chambers & Valves | 2027-03-27 → 2027-04-03 (+7d) | 2027-04-13 → 2027-04-20 (+7d) | 21d → 15d |
| 4 | **PORTABLE WATER IN ( PH2-G-MCG0 )** |  | 2027-01-27 → 2027-02-03 (+7d) |  |
| 7 | **Pipes Work** |  | 2026-11-02 → 2026-11-09 (+7d) |  |
| 3 | **bedding Works** |  | 2026-10-05 → 2026-10-12 (+7d) |  |
| SDR-2-CON-PW-ZA-3140 | Sand bedding for PW HDPE Pipe 225 mm. |  | 2026-10-05 → 2026-10-12 (+7d) | 155d → 149d |
| 5 | **Testing** | 2026-10-05 → 2026-10-12 (+7d) | 2026-10-13 → 2026-10-20 (+7d) |  |
| SDR-2-CON-PW-ZA-3130 | Testing of PW HDPE Pipe 225 mm. | 2026-10-05 → 2026-10-12 (+7d) | 2026-10-13 → 2026-10-20 (+7d) | 155d → 149d |
| 4 | **Backfilling** | 2026-10-14 → 2026-10-21 (+7d) | 2026-11-02 → 2026-11-09 (+7d) |  |
| SDR-2-CON-PW-ZA-3150 | Backfilling of PW HDPE Pipe 225 mm. | 2026-10-14 → 2026-10-21 (+7d) | 2026-11-02 → 2026-11-09 (+7d) | 155d → 149d |
| 3 | **Valve Chambers & Valves & Fire Hydrant** | 2026-10-05 → 2026-10-12 (+7d) | 2027-01-27 → 2027-02-03 (+7d) |  |
| 3 | **Excavation** | 2026-10-05 → 2026-10-12 (+7d) | 2026-11-22 → 2026-11-29 (+7d) |  |
| SDR-2-CON-PW-ZA-4010 | Excavation for Valve Chambers Section 1 | 2026-10-05 → 2026-10-12 (+7d) | 2026-10-28 → 2026-11-04 (+7d) | 81d → 75d |
| SDR-2-CON-PW-ZA-3180 | Excavation for Valve Chambers Section 2 | 2026-10-29 → 2026-11-05 (+7d) | 2026-11-22 → 2026-11-29 (+7d) | 81d → 75d |
| 1 | **bedding Works** | 2026-11-23 → 2026-11-30 (+7d) | 2026-12-13 → 2026-12-20 (+7d) |  |
| SDR-2-CON-PW-ZA-3160 | Sand bedding for Valve Chambers | 2026-11-23 → 2026-11-30 (+7d) | 2026-12-13 → 2026-12-20 (+7d) | 81d → 75d |
| 4 | **Install Chambers & Valves & Fire Hydrant** | 2026-12-14 → 2026-12-21 (+7d) | 2026-12-29 → 2027-01-05 (+7d) |  |
| SDR-2-CON-PW-ZA-3190 | Install Chambers & Valves | 2026-12-14 → 2026-12-21 (+7d) | 2026-12-29 → 2027-01-05 (+7d) | 81d → 75d |
| 2 | **Testing** | 2026-12-30 → 2027-01-06 (+7d) | 2027-01-07 → 2027-01-14 (+7d) |  |
| SDR-2-CON-PW-ZA-3170 | Testing for Chambers & Valves | 2026-12-30 → 2027-01-06 (+7d) | 2027-01-07 → 2027-01-14 (+7d) | 81d → 75d |
| 6 | **Backfilling** | 2027-01-09 → 2027-01-16 (+7d) | 2027-01-27 → 2027-02-03 (+7d) |  |
| SDR-2-CON-PW-ZA-3200 | Backfilling for Chambers & Valves | 2027-01-09 → 2027-01-16 (+7d) | 2027-01-27 → 2027-02-03 (+7d) | 81d → 75d |
| 5 | **PORTABLE WATER IN ( PH2-G-MCZ0 )** |  | 2027-01-28 → 2027-02-04 (+7d) |  |
| 7 | **Pipes Work** |  | 2026-11-01 → 2026-11-08 (+7d) |  |
| 8 | **bedding Works** |  | 2026-10-05 → 2026-10-12 (+7d) |  |
| SDR-2-CON-PW-ZA-2640 | Sand bedding for PW HDPE Pipes 315 mm |  | 2026-10-05 → 2026-10-12 (+7d) | 156d → 150d |
| 2 | **Pipes Laying** |  | 2026-10-05 → 2026-10-12 (+7d) |  |
| SDR-2-CON-PW-ZA-2570 | Install PW 315 mm HDPE Pipe |  | 2026-10-05 → 2026-10-12 (+7d) | 156d → 150d |

| ID | Task | Start | Finish | Complete | Total float |
| --- | --- | --- | --- | --- | --- |
| 5 | **Testing** | 2026-10-06 → 2026-10-13 (+7d) | 2026-10-12 → 2026-10-19 (+7d) |  |  |
| SDR-2-CON-PW-ZA-2630 | Testing of PW HDPE Pipe 315 mm. | 2026-10-06 → 2026-10-13 (+7d) | 2026-10-12 → 2026-10-19 (+7d) |  | 156d → 150d |
| 9 | **Backfilling** | 2026-10-13 → 2026-10-20 (+7d) | 2026-11-01 → 2026-11-08 (+7d) |  |  |
| SDR-2-CON-PW-ZA-2650 | Backfilling of PW HDPE Pipe 315 mm. | 2026-10-13 → 2026-10-20 (+7d) | 2026-11-01 → 2026-11-08 (+7d) |  | 156d → 150d |
| 3 | **Valve Chambers & Valves & Fire Hydrant** | 2026-10-05 → 2026-10-12 (+7d) | 2027-01-28 → 2027-02-04 (+7d) |  |  |
| 3 | **Excavation** | 2026-10-05 → 2026-10-12 (+7d) | 2026-11-22 → 2026-11-29 (+7d) |  |  |
| SDR-2-CON-PW-ZA-4030 | Excavation for Valve Chambers Section 1 | 2026-10-05 → 2026-10-12 (+7d) | 2026-10-28 → 2026-11-04 (+7d) |  | 80d → 74d |
| SDR-2-CON-PW-ZA-2600 | Excavation for Valve Chambers Section 2 | 2026-10-29 → 2026-11-05 (+7d) | 2026-11-22 → 2026-11-29 (+7d) |  | 80d → 74d |
| 1 | **bedding Works** | 2026-11-23 → 2026-11-30 (+7d) | 2026-12-14 → 2026-12-21 (+7d) |  |  |
| SDR-2-CON-PW-ZA-2580 | Sand bedding for Valve Chambers | 2026-11-23 → 2026-11-30 (+7d) | 2026-12-14 → 2026-12-21 (+7d) |  | 80d → 74d |
| 4 | **Install Chambers & Valves & Fire Hydrant** | 2026-12-15 → 2026-12-22 (+7d) | 2027-01-02 → 2027-01-09 (+7d) |  |  |
| SDR-2-CON-PW-ZA-2610 | Install Chambers & Valves | 2026-12-15 → 2026-12-22 (+7d) | 2027-01-02 → 2027-01-09 (+7d) |  | 80d → 74d |
| 2 | **Testing** | 2027-01-03 → 2027-01-10 (+7d) | 2027-01-09 → 2027-01-16 (+7d) |  |  |
| SDR-2-CON-PW-ZA-2590 | Testing for Chambers & Valves | 2027-01-03 → 2027-01-10 (+7d) | 2027-01-09 → 2027-01-16 (+7d) |  | 80d → 74d |
| 6 | **Backfilling** | 2027-01-10 → 2027-01-17 (+7d) | 2027-01-28 → 2027-02-04 (+7d) |  |  |
| SDR-2-CON-PW-ZA-2620 | Backfilling for Chambers & Valves | 2027-01-10 → 2027-01-17 (+7d) | 2027-01-28 → 2027-02-04 (+7d) |  | 80d → 74d |
| EW | **Electrical Works** |  | 2027-02-25 → 2027-03-04 (+7d) |  |  |
| ZA | **ZONE A** |  | 2027-02-25 → 2027-03-04 (+7d) |  |  |
| 1 | **Street Lighting Network** |  | 2027-02-25 → 2027-03-04 (+7d) |  |  |
| 16 | **Street Lighting Network IN ( PH2-COL-MC10 )** |  | 2027-02-17 → 2027-02-25 (+8d) |  |  |
| 10 | **Excavation** |  | 2026-10-05 → 2026-10-12 (+7d) |  |  |
| SDR-2-CON-SL-ZA-1000 | Excavation for LV Cable Trenches |  | 2026-10-05 → 2026-10-12 (+7d) |  | 4d → 3d |
| 11 | **Install Footings** |  | 2026-12-13 → 2026-12-20 (+7d) |  |  |
| SDR-2-CON-SL-ZA-1010 | Install Footings |  | 2026-12-13 → 2026-12-20 (+7d) |  | 8d → 2d |
| 12 | **Backfilling** | 2026-12-14 → 2026-12-21 (+7d) | 2027-01-06 → 2027-01-13 (+7d) |  |  |
| SDR-2-CON-SL-ZA-1110 | Backfilling over LV Cables of Street lighting | 2026-12-14 → 2026-12-21 (+7d) | 2027-01-06 → 2027-01-13 (+7d) |  | 8d → 2d |
| 13 | **Install pole** | 2027-01-25 → 2027-02-01 (+7d) | 2027-02-17 → 2027-02-25 (+8d) |  |  |
| SDR-2-CON-SL-ZA-1100 | Install Pole | 2027-01-25 → 2027-02-01 (+7d) | 2027-02-17 → 2027-02-25 (+8d) |  | 8d → 2d |
| 17 | **Street Lighting Network IN ( PH2-COL-MC20 )** |  | 2027-01-02 → 2027-01-09 (+7d) |  |  |
| 10 | **Excavation** |  | 2026-10-05 → 2026-10-12 (+7d) |  |  |
| SDR-2-CON-SL-ZA-2870 | Excavation for LV Cable Trenches |  | 2026-10-05 → 2026-10-12 (+7d) |  | 67d → 61d |
| 11 | **Install Footings** |  | 2026-10-11 → 2026-10-18 (+7d) |  |  |
| SDR-2-CON-SL-ZA-2880 | Install Footings |  | 2026-10-11 → 2026-10-18 (+7d) | 30% → 35% | 62d → 56d |
| 12 | **Backfilling** | 2026-10-12 → 2026-10-19 (+7d) | 2026-11-04 → 2026-11-11 (+7d) |  |  |
| SDR-2-CON-SL-ZA-2900 | Backfilling over LV Cables of Street lighting | 2026-10-12 → 2026-10-19 (+7d) | 2026-11-04 → 2026-11-11 (+7d) |  | 62d → 56d |
| 13 | **Install pole** | 2026-12-09 → 2026-12-16 (+7d) | 2027-01-02 → 2027-01-09 (+7d) |  |  |
| SDR-2-CON-SL-ZA-2890 | Install Pole | 2026-12-09 → 2026-12-16 (+7d) | 2027-01-02 → 2027-01-09 (+7d) |  | 48d → 42d |
| 18 | **Street Lighting Network IN ( PH2-A-MCA0 )** |  | 2026-12-19 → 2026-12-26 (+7d) |  |  |
| 10 | **Excavation** |  | 2026-10-05 → 2026-10-12 (+7d) |  |  |
| SDR-2-CON-SL-ZA-3610 | Excavation for LV Cable Drawpits |  | 2026-10-05 → 2026-10-12 (+7d) | 65% → 70% | 23d → 17d |
| SDR-2-CON-SL-ZA-1300 | Excavation for LV Cable Trenches |  | 2026-10-05 → 2026-10-12 (+7d) |  | 66d → 60d |
| 11 | **Install Footings** |  | 2026-11-07 → 2026-11-14 (+7d) |  |  |
| SDR-2-CON-SL-ZA-1310 | Install Footings |  | 2026-11-07 → 2026-11-14 (+7d) | 30% → 35% | 38d → 32d |
| 12 | **Backfilling** | 2026-11-01 → 2026-11-08 (+7d) | 2026-11-24 → 2026-12-01 (+7d) |  |  |
| SDR-2-CON-SL-ZA-1410 | Backfilling over LV Cables of Street lighting | 2026-11-01 → 2026-11-08 (+7d) | 2026-11-24 → 2026-12-01 (+7d) |  | 38d → 32d |
| 13 | **Install pole** | 2026-11-25 → 2026-12-02 (+7d) | 2026-12-19 → 2026-12-26 (+7d) |  |  |
| SDR-2-CON-SL-ZA-1400 | Install Pole | 2026-11-25 → 2026-12-02 (+7d) | 2026-12-19 → 2026-12-26 (+7d) |  | 38d → 32d |
| 19 | **Street Lighting Network IN ( PH2-A-MCB0 )** |  | 2026-12-07 → 2026-12-14 (+7d) |  |  |
| 10 | **Excavation** |  | 2026-10-05 → 2026-10-12 (+7d) |  |  |
| SDR-2-CON-SL-ZA-3620 | Excavation for LV Cable Drawpits |  | 2026-10-05 → 2026-10-12 (+7d) | 70% → 75% | 23d → 17d |
| SDR-2-CON-SL-ZA-2950 | Excavation for LV Cable Trenches |  | 2026-10-05 → 2026-10-12 (+7d) |  | 23d → 17d |
| 11 | **Install Footings** |  | 2026-10-07 → 2026-10-14 (+7d) |  |  |
| SDR-2-CON-SL-ZA-2960 | Install Footings |  | 2026-10-07 → 2026-10-14 (+7d) | 30% → 35% | 21d → 15d |
| 12 | **Backfilling** | 2026-10-08 → 2026-10-15 (+7d) | 2026-11-01 → 2026-11-08 (+7d) |  |  |
| SDR-2-CON-SL-ZA-2980 | Backfilling over LV Cables of Street lighting | 2026-10-08 → 2026-10-15 (+7d) | 2026-11-01 → 2026-11-08 (+7d) |  | 21d → 15d |
| 13 | **Install pole** | 2026-11-14 → 2026-11-21 (+7d) | 2026-12-07 → 2026-12-14 (+7d) |  |  |
| SDR-2-CON-SL-ZA-2970 | Install Pole | 2026-11-14 → 2026-11-21 (+7d) | 2026-12-07 → 2026-12-14 (+7d) |  | 21d → 15d |
| 20 | **Street Lighting Network IN ( PH2-A-MCC0 )** |  | 2026-12-16 → 2026-12-23 (+7d) |  |  |
| 10 | **Excavation** |  | 2026-10-05 → 2026-10-12 (+7d) |  |  |
| SDR-2-CON-SL-ZA-3630 | Excavation for LV Cable Drawpits |  | 2026-10-05 → 2026-10-12 (+7d) | 75% → 80% | 40d → 34d |
| SDR-2-CON-SL-ZA-2990 | Excavation for LV Cable Trenches |  | 2026-10-05 → 2026-10-12 (+7d) |  | 66d → 60d |
| 11 | **Install Footings** |  | 2026-10-11 → 2026-10-18 (+7d) |  |  |
| SDR-2-CON-SL-ZA-3000 | Install Footings |  | 2026-10-11 → 2026-10-18 (+7d) | 30% → 35% | 61d → 55d |
| 12 | **Backfilling** | 2026-10-12 → 2026-10-19 (+7d) | 2026-11-04 → 2026-11-11 (+7d) |  |  |
| SDR-2-CON-SL-ZA-3020 | Backfilling over LV Cables of Street lighting | 2026-10-12 → 2026-10-19 (+7d) | 2026-11-04 → 2026-11-11 (+7d) |  | 61d → 55d |
| 13 | **Install pole** | 2026-11-23 → 2026-11-30 (+7d) | 2026-12-16 → 2026-12-23 (+7d) |  |  |
| SDR-2-CON-SL-ZA-3010 | Install Pole | 2026-11-23 → 2026-11-30 (+7d) | 2026-12-16 → 2026-12-23 (+7d) |  | 61d → 55d |
| 21 | **Street Lighting Network IN ( PH2-A-MCD0 )** |  | 2027-02-25 → 2027-03-04 (+7d) |  |  |
| 10 | **Excavation** |  | 2026-10-05 → 2026-10-12 (+7d) |  |  |
| SDR-2-CON-SL-ZA-3640 | Excavation for LV Cable Drawpits |  | 2026-10-05 → 2026-10-12 (+7d) | 75% → 80% | 40d → 34d |

| ID | Task | Start | Finish | Total float |
| --- | --- | --- | --- | --- |
| SDR-2-CON-SL-ZA-3030 | Excavation for LV Cable Trenches |  | 2026-10-05 → 2026-10-12 (+7d) | 87d → 81d |
| 11 | **Install Footings** |  | 2026-10-11 → 2026-10-18 (+7d) |  |
| SDR-2-CON-SL-ZA-3040 | Install Footings |  | 2026-10-11 → 2026-10-18 (+7d) | 82d → 76d |
| 12 | **Backfilling** | 2026-10-12 → 2026-10-19 (+7d) | 2026-11-04 → 2026-11-11 (+7d) |  |
| SDR-2-CON-SL-ZA-3060 | Backfilling over LV Cables of Street lighting | 2026-10-12 → 2026-10-19 (+7d) | 2026-11-04 → 2026-11-11 (+7d) | 82d → 76d |
| 13 | **Install pole** | 2027-02-01 → 2027-02-08 (+7d) | 2027-02-25 → 2027-03-04 (+7d) |  |
| SDR-2-CON-SL-ZA-3050 | Install Pole | 2027-02-01 → 2027-02-08 (+7d) | 2027-02-25 → 2027-03-04 (+7d) | 22d → 16d |
| 22 | **Street Lighting Network IN ( PH2-A-MCE0 )** |  | 2026-12-14 → 2026-12-21 (+7d) |  |
| 10 | **Excavation** |  | 2026-10-05 → 2026-10-12 (+7d) |  |
| SDR-2-CON-SL-ZA-3650 | Excavation for LV Cable Drawpits |  | 2026-10-05 → 2026-10-12 (+7d) | 40d → 34d |
| SDR-2-CON-SL-ZA-3070 | Excavation for LV Cable Trenches |  | 2026-10-05 → 2026-10-12 (+7d) | 107d → 101d |
| 11 | **Install Footings** |  | 2026-10-11 → 2026-10-18 (+7d) |  |
| SDR-2-CON-SL-ZA-3080 | Install Footings |  | 2026-10-11 → 2026-10-18 (+7d) | 102d → 96d |
| 12 | **Backfilling** | 2026-10-12 → 2026-10-19 (+7d) | 2026-11-04 → 2026-11-11 (+7d) |  |
| SDR-2-CON-SL-ZA-3100 | Backfilling over LV Cables of Street lighting | 2026-10-12 → 2026-10-19 (+7d) | 2026-11-04 → 2026-11-11 (+7d) | 102d → 96d |
| 13 | **Install pole** | 2026-11-23 → 2026-11-30 (+7d) | 2026-12-14 → 2026-12-21 (+7d) |  |
| SDR-2-CON-SL-ZA-3090 | Install Pole | 2026-11-23 → 2026-11-30 (+7d) | 2026-12-14 → 2026-12-21 (+7d) | 102d → 96d |
| 23 | **Street Lighting Network IN ( PH2-A-MCF0 )** |  | 2026-12-19 → 2026-12-26 (+7d) |  |
| 10 | **Excavation** |  | 2026-10-14 → 2026-10-21 (+7d) |  |
| SDR-2-CON-SL-ZA-3660 | Excavation for LV Cable Drawpits |  | 2026-10-14 → 2026-10-21 (+7d) | 32d → 26d |
| SDR-2-CON-SL-ZA-3110 | Excavation for LV Cable Trenches |  | 2026-10-14 → 2026-10-21 (+7d) | 32d → 26d |
| 11 | **Install Footings** |  | 2026-10-14 → 2026-10-21 (+7d) |  |
| SDR-2-CON-SL-ZA-3120 | Install Footings |  | 2026-10-14 → 2026-10-21 (+7d) | 32d → 26d |
| 12 | **Backfilling** | 2026-10-15 → 2026-10-22 (+7d) | 2026-11-07 → 2026-11-14 (+7d) |  |
| SDR-2-CON-SL-ZA-3140 | Backfilling over LV Cables of Street lighting | 2026-10-15 → 2026-10-22 (+7d) | 2026-11-07 → 2026-11-14 (+7d) | 32d → 26d |
| 13 | **Install pole** | 2026-11-25 → 2026-12-02 (+7d) | 2026-12-19 → 2026-12-26 (+7d) |  |
| SDR-2-CON-SL-ZA-3130 | Install Pole | 2026-11-25 → 2026-12-02 (+7d) | 2026-12-19 → 2026-12-26 (+7d) | 32d → 26d |
| 24 | **Street Lighting Network IN ( PH2-A-MCG0 )** |  | 2026-12-07 → 2026-12-14 (+7d) |  |
| 10 | **Excavation** |  | 2026-10-14 → 2026-10-21 (+7d) |  |
| SDR-2-CON-SL-ZA-3670 | Excavation for LV Cable Drawpits |  | 2026-10-14 → 2026-10-21 (+7d) | 43d → 37d |
| SDR-2-CON-SL-ZA-3150 | Excavation for LV Cable Trenches |  | 2026-10-14 → 2026-10-21 (+7d) | 108d → 102d |
| 11 | **Install Footings** |  | 2026-10-14 → 2026-10-21 (+7d) |  |
| SDR-2-CON-SL-ZA-3160 | Install Footings |  | 2026-10-14 → 2026-10-21 (+7d) | 108d → 102d |
| 12 | **Backfilling** | 2026-10-15 → 2026-10-22 (+7d) | 2026-11-05 → 2026-11-12 (+7d) |  |
| SDR-2-CON-SL-ZA-3180 | Backfilling over LV Cables of Street lighting | 2026-10-15 → 2026-10-22 (+7d) | 2026-11-05 → 2026-11-12 (+7d) | 108d → 102d |
| 13 | **Install pole** | 2026-11-24 → 2026-12-01 (+7d) | 2026-12-07 → 2026-12-14 (+7d) |  |
| SDR-2-CON-SL-ZA-3170 | Install Pole | 2026-11-24 → 2026-12-01 (+7d) | 2026-12-07 → 2026-12-14 (+7d) | 108d → 102d |
| 25 | **Street Lighting Network IN ( PH2-A-MCH0 )** |  | 2026-12-13 → 2026-12-20 (+7d) |  |
| 10 | **Excavation** |  | 2026-10-14 → 2026-10-21 (+7d) |  |
| SDR-2-CON-SL-ZA-3680 | Excavation for LV Cable Drawpits |  | 2026-10-14 → 2026-10-21 (+7d) | 43d → 37d |
| SDR-2-CON-SL-ZA-3190 | Excavation for LV Cable Trenches |  | 2026-10-14 → 2026-10-21 (+7d) | 43d → 37d |
| 11 | **Install Footings** |  | 2026-10-14 → 2026-10-21 (+7d) |  |
| SDR-2-CON-SL-ZA-3200 | Install Footings |  | 2026-10-14 → 2026-10-21 (+7d) | 43d → 37d |
| 12 | **Backfilling** | 2026-10-15 → 2026-10-22 (+7d) | 2026-11-05 → 2026-11-12 (+7d) |  |
| SDR-2-CON-SL-ZA-3220 | Backfilling over LV Cables of Street lighting | 2026-10-15 → 2026-10-22 (+7d) | 2026-11-05 → 2026-11-12 (+7d) | 43d → 37d |
| 13 | **Install pole** | 2026-11-24 → 2026-12-01 (+7d) | 2026-12-13 → 2026-12-20 (+7d) |  |
| SDR-2-CON-SL-ZA-3210 | Install Pole | 2026-11-24 → 2026-12-01 (+7d) | 2026-12-13 → 2026-12-20 (+7d) | 43d → 37d |
| 27 | **Street Lighting Network IN ( PH2-ART-MC10 )** |  | 2026-12-17 → 2026-12-24 (+7d) |  |
| 10 | **Excavation** |  | 2026-10-14 → 2026-10-21 (+7d) |  |
| SDR-2-CON-SL-ZA-3690 | Excavation for LV Cable Drawpits |  | 2026-10-14 → 2026-10-21 (+7d) | 51d → 45d |
| SDR-2-CON-SL-ZA-2910 | Excavation for LV Cable Trenches |  | 2026-10-14 → 2026-10-21 (+7d) | 53d → 47d |
| 11 | **Install Footings** |  | 2026-10-14 → 2026-10-21 (+7d) |  |
| SDR-2-CON-SL-ZA-2920 | Install Footings |  | 2026-10-14 → 2026-10-21 (+7d) | 53d → 47d |
| 12 | **Backfilling** | 2026-10-15 → 2026-10-22 (+7d) | 2026-11-08 → 2026-11-15 (+7d) |  |
| SDR-2-CON-SL-ZA-2940 | Backfilling over LV Cables of Street lighting | 2026-10-15 → 2026-10-22 (+7d) | 2026-11-08 → 2026-11-15 (+7d) | 53d → 47d |
| 13 | **Install pole** | 2026-11-24 → 2026-12-01 (+7d) | 2026-12-17 → 2026-12-24 (+7d) |  |
| SDR-2-CON-SL-ZA-2930 | Install Pole | 2026-11-24 → 2026-12-01 (+7d) | 2026-12-17 → 2026-12-24 (+7d) | 103d → 97d |
| 10 | **Lighting Pole Panels** | 2026-10-15 → 2026-10-22 (+7d) | 2027-02-02 → 2027-02-09 (+7d) |  |
| 1 | **Excavation** | 2026-10-15 → 2026-10-22 (+7d) | 2026-11-08 → 2026-11-15 (+7d) |  |
| SDR-2-CON-SL-ZA-2650 | Street Lighting Panels Excavation | 2026-10-15 → 2026-10-22 (+7d) | 2026-11-08 → 2026-11-15 (+7d) | 50d → 44d |
| 2 | **Install Footings** | 2026-11-09 → 2026-11-16 (+7d) | 2026-12-01 → 2026-12-08 (+7d) |  |
| SDR-2-CON-SL-ZA-2760 | Installation Footings Street Lighting Panels | 2026-11-09 → 2026-11-16 (+7d) | 2026-12-01 → 2026-12-08 (+7d) | 63d → 57d |
| 3 | **Backfilling** | 2026-12-02 → 2026-12-09 (+7d) | 2026-12-22 → 2026-12-29 (+7d) |  |
| SDR-2-CON-SL-ZA-2770 | Street Lighting Panels Backfilling | 2026-12-02 → 2026-12-09 (+7d) | 2026-12-22 → 2026-12-29 (+7d) | 63d → 57d |
| 4 | **Install pole** | 2027-01-10 → 2027-01-17 (+7d) | 2027-02-02 → 2027-02-09 (+7d) |  |
| SDR-2-CON-SL-ZA-2780 | Street Lighting Panels Installation | 2027-01-10 → 2027-01-17 (+7d) | 2027-02-02 → 2027-02-09 (+7d) | 63d → 57d |
| 11 | **Ring Main Unit** | 2026-10-15 → 2026-10-22 (+7d) | 2027-01-04 → 2027-01-11 (+7d) |  |
| 1 | **Leveling** | 2026-10-15 → 2026-10-22 (+7d) | 2026-11-07 → 2026-11-14 (+7d) |  |
| SDR-2-CON-SL-ZA-2660 | Ring Main Unit leveling | 2026-10-15 → 2026-10-22 (+7d) | 2026-11-07 → 2026-11-14 (+7d) | 50d → 44d |
| 2 | **Lean Concrete** | 2026-11-08 → 2026-11-15 (+7d) | 2026-11-30 → 2026-12-07 (+7d) |  |

| ID | Task | Start | Finish | Total float |
| --- | --- | --- | --- | --- |
| SDR-2-CON-SL-ZA-2790 | Ring Main Unit Lean Concrete | 2026-11-08 → 2026-11-15 (+7d) | 2026-11-30 → 2026-12-07 (+7d) | 51d → 45d |
| 3 | **Installation** | 2026-12-13 → 2026-12-20 (+7d) | 2027-01-04 → 2027-01-11 (+7d) |  |
| SDR-2-CON-SL-ZA-2800 | Ring Main Unit installation for Street Lighting | 2026-12-13 → 2026-12-20 (+7d) | 2027-01-04 → 2027-01-11 (+7d) | 51d → 45d |
| 12 | **Feeder Pillars** | 2026-11-01 → 2026-11-08 (+7d) | 2027-01-26 → 2027-02-02 (+7d) |  |
| 1 | **Leveling** | 2026-11-01 → 2026-11-08 (+7d) | 2026-11-23 → 2026-11-30 (+7d) |  |
| SDR-2-CON-SL-ZA-2670 | Feeder Pillars Leveling | 2026-11-01 → 2026-11-08 (+7d) | 2026-11-23 → 2026-11-30 (+7d) | 36d → 30d |
| 2 | **Lean Concrete** | 2026-11-24 → 2026-12-01 (+7d) | 2026-12-16 → 2026-12-23 (+7d) |  |
| SDR-2-CON-SL-ZA-2810 | Feeder Pillars Lean Concrete | 2026-11-24 → 2026-12-01 (+7d) | 2026-12-16 → 2026-12-23 (+7d) | 49d → 43d |
| 3 | **Installation** | 2027-01-04 → 2027-01-11 (+7d) | 2027-01-26 → 2027-02-02 (+7d) |  |
| SDR-2-CON-SL-ZA-2820 | Feeder Pillars Installation | 2027-01-04 → 2027-01-11 (+7d) | 2027-01-26 → 2027-02-02 (+7d) | 49d → 43d |
| 13 | **KWH Frame** | 2026-12-05 → 2026-12-12 (+7d) | 2027-02-11 → 2027-02-18 (+7d) |  |
| 1 | **Leveling** | 2026-12-05 → 2026-12-12 (+7d) | 2026-12-27 → 2027-01-03 (+7d) |  |
| SDR-2-CON-SL-ZA-2680 | KWH meter mounting frame Leveling | 2026-12-05 → 2026-12-12 (+7d) | 2026-12-27 → 2027-01-03 (+7d) | 8d → 2d |
| 2 | **Lean Concrete** | 2026-12-28 → 2027-01-04 (+7d) | 2027-01-19 → 2027-01-26 (+7d) |  |
| SDR-2-CON-SL-ZA-2830 | KWH meter mounting frame Lean Concrete | 2026-12-28 → 2027-01-04 (+7d) | 2027-01-19 → 2027-01-26 (+7d) | 18d → 12d |
| 3 | **Installation** | 2027-01-20 → 2027-01-27 (+7d) | 2027-02-11 → 2027-02-18 (+7d) |  |
| SDR-2-CON-SL-ZA-2840 | KWH meter mounting frame installation | 2027-01-20 → 2027-01-27 (+7d) | 2027-02-11 → 2027-02-18 (+7d) | 18d → 12d |
| 14 | **Street Lighting Sub-station** | 2026-12-06 → 2026-12-13 (+7d) | 2027-02-14 → 2027-02-21 (+7d) |  |
| 1 | **Leveling** | 2026-12-06 → 2026-12-13 (+7d) | 2026-12-28 → 2027-01-04 (+7d) |  |
| SDR-2-CON-SL-ZA-2690 | Unit Substation Leveling | 2026-12-06 → 2026-12-13 (+7d) | 2026-12-28 → 2027-01-04 (+7d) | 8d → 2d |
| 2 | **Lean Concrete** | 2026-12-29 → 2027-01-05 (+7d) | 2027-01-20 → 2027-01-27 (+7d) |  |
| SDR-2-CON-SL-ZA-2850 | Unit Substation Lean Concrete | 2026-12-29 → 2027-01-05 (+7d) | 2027-01-20 → 2027-01-27 (+7d) | 16d → 10d |
| 3 | **Installation** | 2027-01-21 → 2027-01-28 (+7d) | 2027-02-14 → 2027-02-21 (+7d) |  |
| SDR-2-CON-SL-ZA-2860 | Unit Substation Install for Street Lighting | 2027-01-21 → 2027-01-28 (+7d) | 2027-02-14 → 2027-02-21 (+7d) | 16d → 10d |
| 2 | **MV Network** |  | 2026-12-09 → 2026-12-16 (+7d) |  |
| 1 | **LOOP 3** |  | 2026-11-08 → 2026-11-05 (-3d) |  |
| 6 | **Excavation** |  | 2026-10-05 → 2026-10-12 (+7d) |  |
| SDR-2-CON-MV-ZA-1000 | Excavation Works |  | 2026-10-05 → 2026-10-12 (+7d) | 25d → 19d |
| 7 | **Pipe laying** |  | 2026-10-05 → 2026-10-12 (+7d) |  |
| SDR-2-CON-MV-ZA-1070 | Pipe Laying |  | 2026-10-05 → 2026-10-12 (+7d) | 30d → 29d |
| 8 | **Backfilling** |  | 2026-10-05 → 2026-10-12 (+7d) |  |
| SDR-2-CON-MV-ZA-1150 | Backfilling Works |  | 2026-10-05 → 2026-10-12 (+7d) | 30d → 29d |
| 9 | **Pulling Cable** | 2026-10-15 → 2026-10-13 (-2d) | 2026-11-08 → 2026-11-05 (-3d) |  |
| SDR-2-CON-MV-ZA-1100 | Pulling Cable | 2026-10-15 → 2026-10-13 (-2d) | 2026-11-08 → 2026-11-05 (-3d) | 22d → 29d |
| 2 | **LOOP 4** |  | 2026-12-09 → 2026-12-16 (+7d) |  |
| 6 | **Excavation** |  | 2026-10-05 → 2026-10-12 (+7d) |  |
| SDR-2-CON-MV-ZA-1160 | Excavation Works |  | 2026-10-05 → 2026-10-12 (+7d) | 26d → 20d |
| 7 | **Pipe laying** |  | 2026-10-05 → 2026-10-12 (+7d) |  |
| SDR-2-CON-MV-ZA-1170 | Pipe Laying |  | 2026-10-05 → 2026-10-12 (+7d) | 26d → 20d |
| 8 | **Backfilling** | 2026-10-06 → 2026-10-13 (+7d) | 2026-10-29 → 2026-11-05 (+7d) |  |
| SDR-2-CON-MV-ZA-1190 | Backfilling Works | 2026-10-06 → 2026-10-13 (+7d) | 2026-10-29 → 2026-11-05 (+7d) | 26d → 20d |
| 9 | **Pulling Cable** | 2026-11-16 → 2026-11-23 (+7d) | 2026-12-09 → 2026-12-16 (+7d) |  |
| SDR-2-CON-MV-ZA-1180 | Pulling Cable | 2026-11-16 → 2026-11-23 (+7d) | 2026-12-09 → 2026-12-16 (+7d) | 26d → 20d |
| 3 | **LOOP 5** |  | 2026-12-02 → 2026-12-09 (+7d) |  |
| 6 | **Excavation** |  | 2026-10-05 → 2026-10-12 (+7d) |  |
| SDR-2-CON-MV-ZA-1200 | Excavation Works |  | 2026-10-05 → 2026-10-12 (+7d) | 32d → 26d |
| 7 | **Pipe laying** |  | 2026-10-05 → 2026-10-12 (+7d) |  |
| SDR-2-CON-MV-ZA-1210 | Pipe Laying |  | 2026-10-05 → 2026-10-12 (+7d) | 32d → 26d |
| 8 | **Backfilling** | 2026-10-06 → 2026-10-13 (+7d) | 2026-10-29 → 2026-11-05 (+7d) |  |
| SDR-2-CON-MV-ZA-1230 | Backfilling Works | 2026-10-06 → 2026-10-13 (+7d) | 2026-10-29 → 2026-11-05 (+7d) | 32d → 26d |
| 9 | **Pulling Cable** | 2026-11-09 → 2026-11-16 (+7d) | 2026-12-02 → 2026-12-09 (+7d) |  |
| SDR-2-CON-MV-ZA-1220 | Pulling Cable | 2026-11-09 → 2026-11-16 (+7d) | 2026-12-02 → 2026-12-09 (+7d) | 32d → 26d |
| 4 | **LOOP 6** |  | 2026-12-02 → 2026-12-07 (+5d) |  |
| 6 | **Excavation** |  | 2026-10-05 → 2026-10-12 (+7d) |  |
| SDR-2-CON-MV-ZA-1240 | Excavation Works |  | 2026-10-05 → 2026-10-12 (+7d) | 37d → 31d |
| 7 | **Pipe laying** |  | 2026-10-05 → 2026-10-12 (+7d) |  |
| SDR-2-CON-MV-ZA-1250 | Pipe Laying |  | 2026-10-05 → 2026-10-12 (+7d) | 37d → 31d |
| 8 | **Backfilling** | 2026-10-06 → 2026-10-13 (+7d) | 2026-10-29 → 2026-11-05 (+7d) |  |
| SDR-2-CON-MV-ZA-1270 | Backfilling Works | 2026-10-06 → 2026-10-13 (+7d) | 2026-10-29 → 2026-11-05 (+7d) | 37d → 31d |
| 9 | **Pulling Cable** | 2026-11-09 → 2026-11-14 (+5d) | 2026-12-02 → 2026-12-07 (+5d) |  |
| SDR-2-CON-MV-ZA-1260 | Pulling Cable | 2026-11-09 → 2026-11-14 (+5d) | 2026-12-02 → 2026-12-07 (+5d) | 35d → 31d |
| 3 | **TELECOMMUNICATIONS Works** |  | 2027-02-06 → 2027-02-13 (+7d) |  |
| 1 | **TELECOMMUNICATION IN ( PH2-COL-MC10 )** |  | 2027-02-01 → 2027-02-08 (+7d) |  |
| 3 | **Ducts** |  | 2027-02-01 → 2027-02-08 (+7d) |  |
| 2 | **Excavation** |  | 2026-11-14 → 2026-11-21 (+7d) |  |
| SDR-2-CON-TE-ZA-4560 | Excavation for telecom crossing ducts |  | 2026-10-20 → 2026-10-27 (+7d) | 7d → 1d |
| SDR-2-CON-TE-ZA-1000 | Excavation for telecom trenches | 2026-10-21 → 2026-10-28 (+7d) | 2026-11-14 → 2026-11-21 (+7d) | 14d → 28d |
| 5 | **Pipe laying** | 2026-11-15 → 2026-11-22 (+7d) | 2026-12-06 → 2026-12-13 (+7d) |  |
| SDR-2-CON-TE-ZA-1010 | HDPE Pipes for Telecom Installation | 2026-11-15 → 2026-11-22 (+7d) | 2026-12-06 → 2026-12-13 (+7d) | 14d → 28d |
| 6 | **Backfilling** | 2026-12-07 → 2026-12-14 (+7d) | 2026-12-27 → 2027-01-03 (+7d) |  |

| ID | Task | Start | Finish | Complete | Total float |
| --- | --- | --- | --- | --- | --- |
| SDR-2-CON-TE-ZA-1020 | Backfilling over HDPE Telecom Pipes | 2026-12-07 → 2026-12-14 (+7d) | 2026-12-27 → 2027-01-03 (+7d) |  | 14d → 28d |
| 7 | **Pulling Cable** | 2027-01-09 → 2027-01-16 (+7d) | 2027-02-01 → 2027-02-08 (+7d) |  |  |
| SDR-2-CON-TE-ZA-1840 | Pulling Cable | 2027-01-09 → 2027-01-16 (+7d) | 2027-02-01 → 2027-02-08 (+7d) |  | 14d → 28d |
| 4 | **Manholes** |  | 2027-01-05 → 2027-01-12 (+7d) |  |  |
| 2 | **Bedding Work** |  | 2026-10-21 → 2026-10-28 (+7d) |  |  |
| SDR-2-CON-TE-ZA-1850 | Sand bedding for Telecom Manhole |  | 2026-10-21 → 2026-10-28 (+7d) | 25% → 30% | 6.74d → 0.74d |
| 3 | **Install Manholes** |  | 2026-11-14 → 2026-11-21 (+7d) |  |  |
| SDR-2-CON-TE-ZA-1040 | Installation of Telecom Manhole |  | 2026-11-14 → 2026-11-21 (+7d) | 25% → 30% | 6.74d → 0.74d |
| 4 | **Testting** | 2026-11-14 → 2026-11-21 (+7d) | 2026-11-30 → 2026-12-07 (+7d) |  |  |
| SDR-2-CON-TE-ZA-1050 | Telecom Manhole finishing works | 2026-11-14 → 2026-11-21 (+7d) | 2026-11-30 → 2026-12-07 (+7d) |  | 6.74d → 0.74d |
| 5 | **Backfilling** | 2026-12-12 → 2026-12-19 (+7d) | 2027-01-05 → 2027-01-12 (+7d) |  |  |
| SDR-2-CON-TE-ZA-1060 | Backfilling over Telecom Manhole | 2026-12-12 → 2026-12-19 (+7d) | 2027-01-05 → 2027-01-12 (+7d) |  | 6.74d → 0.74d |
| 2 | **TELECOMMUNICATION IN ( PH2-COL-MC20 )** |  | 2026-12-02 → 2026-12-09 (+7d) |  |  |
| 3 | **Ducts** |  | 2026-10-29 → 2026-11-05 (+7d) |  |  |
| 2 | **Excavation** |  | 2026-10-05 → 2026-10-12 (+7d) |  |  |
| SDR-2-CON-TE-ZA-3210 | Excavation for telecom crossing ducts & trenches |  | 2026-10-05 → 2026-10-12 (+7d) |  | 4d → 3d |
| 5 | **Pipe laying** |  | 2026-10-05 → 2026-10-12 (+7d) |  |  |
| SDR-2-CON-TE-ZA-3220 | HDPE Pipes for Telecom Installation |  | 2026-10-05 → 2026-10-12 (+7d) |  | 108d → 102d |
| 6 | **Backfilling** |  | 2026-10-05 → 2026-10-12 (+7d) |  |  |
| SDR-2-CON-TE-ZA-3230 | Backfilling over HDPE Telecom Pipes |  | 2026-10-05 → 2026-10-12 (+7d) |  | 108d → 102d |
| 7 | **Pulling Cable** | 2026-10-06 → 2026-10-13 (+7d) | 2026-10-29 → 2026-11-05 (+7d) |  |  |
| SDR-2-CON-TE-ZA-3280 | Pulling Cable | 2026-10-06 → 2026-10-13 (+7d) | 2026-10-29 → 2026-11-05 (+7d) |  | 108d → 102d |
| 4 | **Manholes** |  | 2026-12-02 → 2026-12-09 (+7d) |  |  |
| 2 | **Bedding Work** |  | 2026-10-11 → 2026-10-18 (+7d) |  |  |
| SDR-2-CON-TE-ZA-3290 | Sand bedding for Telecom Manhole |  | 2026-10-11 → 2026-10-18 (+7d) | 25% → 30% | 26d → 25d |
| 3 | **Install Manholes** |  | 2026-10-11 → 2026-10-18 (+7d) |  |  |
| SDR-2-CON-TE-ZA-3250 | Installation of Telecom Manhole |  | 2026-10-11 → 2026-10-18 (+7d) | 55% → 58% | 26d → 25d |
| 4 | **Testting** | 2026-10-12 → 2026-10-19 (+7d) | 2026-10-27 → 2026-11-03 (+7d) |  |  |
| SDR-2-CON-TE-ZA-3260 | Telecom Manhole finishing works | 2026-10-12 → 2026-10-19 (+7d) | 2026-10-27 → 2026-11-03 (+7d) |  | 26d → 25d |
| 5 | **Backfilling** | 2026-11-09 → 2026-11-16 (+7d) | 2026-12-02 → 2026-12-09 (+7d) |  |  |
| SDR-2-CON-TE-ZA-3270 | Backfilling over Telecom Manhole | 2026-11-09 → 2026-11-16 (+7d) | 2026-12-02 → 2026-12-09 (+7d) |  | 26d → 25d |
| 11 | **TELECOMMUNICATION IN ( PH2-A-MCA0 )** |  | 2027-01-28 → 2027-02-04 (+7d) |  |  |
| 3 | **Ducts** |  | 2026-12-24 → 2026-12-31 (+7d) |  |  |
| 2 | **Excavation** |  | 2026-10-05 → 2026-10-12 (+7d) |  |  |
| SDR-2-CON-TE-ZA-3300 | Excavation for telecom crossing ducts & trenches |  | 2026-10-05 → 2026-10-12 (+7d) |  | 4d → 3d |
| 5 | **Pipe laying** | 2026-10-06 → 2026-10-13 (+7d) | 2026-10-27 → 2026-11-03 (+7d) |  |  |
| SDR-2-CON-TE-ZA-3310 | HDPE Pipes for Telecom Installation | 2026-10-06 → 2026-10-13 (+7d) | 2026-10-27 → 2026-11-03 (+7d) |  | 7d → 6d |
| 6 | **Backfilling** | 2026-10-28 → 2026-11-04 (+7d) | 2026-11-19 → 2026-11-26 (+7d) |  |  |
| SDR-2-CON-TE-ZA-3320 | Backfilling over HDPE Telecom Pipes | 2026-10-28 → 2026-11-04 (+7d) | 2026-11-19 → 2026-11-26 (+7d) |  | 7d → 6d |
| 7 | **Pulling Cable** | 2026-12-02 → 2026-12-09 (+7d) | 2026-12-24 → 2026-12-31 (+7d) |  |  |
| SDR-2-CON-TE-ZA-3370 | Pulling Cable | 2026-12-02 → 2026-12-09 (+7d) | 2026-12-24 → 2026-12-31 (+7d) |  | 7d → 6d |
| 4 | **Manholes** |  | 2027-01-28 → 2027-02-04 (+7d) |  |  |
| 1 | **Excavation** |  | 2026-10-15 → 2026-10-22 (+7d) |  |  |
| SDR-2-CON-TE-ZA-3330 | Excavation for Telecom Manholes |  | 2026-10-15 → 2026-10-22 (+7d) | 30% → 35% | 20.81d → 14.81d |
| 2 | **Bedding Work** | 2026-10-15 → 2026-10-22 (+7d) | 2026-11-08 → 2026-11-15 (+7d) |  |  |
| SDR-2-CON-TE-ZA-3380 | Sand bedding for Telecom Manhole | 2026-10-15 → 2026-10-22 (+7d) | 2026-11-08 → 2026-11-15 (+7d) |  | 20.81d → 14.81d |
| 3 | **Install Manholes** | 2026-11-08 → 2026-11-15 (+7d) | 2026-12-01 → 2026-12-08 (+7d) |  |  |
| SDR-2-CON-TE-ZA-3340 | Installation of Telecom Manhole | 2026-11-08 → 2026-11-15 (+7d) | 2026-12-01 → 2026-12-08 (+7d) |  | 20.81d → 14.81d |
| 4 | **Testting** | 2026-12-01 → 2026-12-08 (+7d) | 2026-12-24 → 2026-12-31 (+7d) |  |  |
| SDR-2-CON-TE-ZA-3350 | Telecom Manhole finishing works | 2026-12-01 → 2026-12-08 (+7d) | 2026-12-24 → 2026-12-31 (+7d) |  | 20.81d → 14.81d |
| 5 | **Backfilling** | 2027-01-05 → 2027-01-12 (+7d) | 2027-01-28 → 2027-02-04 (+7d) |  |  |
| SDR-2-CON-TE-ZA-3360 | Backfilling over Telecom Manhole | 2027-01-05 → 2027-01-12 (+7d) | 2027-01-28 → 2027-02-04 (+7d) |  | 20.81d → 14.81d |
| 12 | **TELECOMMUNICATION IN ( PH2-A-MCB0 )** |  | 2027-02-06 → 2027-02-13 (+7d) |  |  |
| 3 | **Ducts** |  | 2026-12-28 → 2027-01-04 (+7d) |  |  |
| 2 | **Excavation** |  | 2026-10-05 → 2026-10-12 (+7d) |  |  |
| SDR-2-CON-TE-ZA-3390 | Excavation for telecom crossing ducts & trenches |  | 2026-10-05 → 2026-10-12 (+7d) | 25% → 30% | 4d → 3d |
| 5 | **Pipe laying** | 2026-10-06 → 2026-10-13 (+7d) | 2026-10-29 → 2026-11-05 (+7d) |  |  |
| SDR-2-CON-TE-ZA-3400 | HDPE Pipes for Telecom Installation | 2026-10-06 → 2026-10-13 (+7d) | 2026-10-29 → 2026-11-05 (+7d) |  | 4d → 3d |
| 6 | **Backfilling** | 2026-10-31 → 2026-11-07 (+7d) | 2026-11-22 → 2026-11-29 (+7d) |  |  |
| SDR-2-CON-TE-ZA-3410 | Backfilling over HDPE Telecom Pipes | 2026-10-31 → 2026-11-07 (+7d) | 2026-11-22 → 2026-11-29 (+7d) |  | 4d → 3d |
| 7 | **Pulling Cable** | 2026-12-05 → 2026-12-12 (+7d) | 2026-12-28 → 2027-01-04 (+7d) |  |  |
| SDR-2-CON-TE-ZA-3460 | Pulling Cable | 2026-12-05 → 2026-12-12 (+7d) | 2026-12-28 → 2027-01-04 (+7d) |  | 4d → 3d |
| 4 | **Manholes** |  | 2027-02-06 → 2027-02-13 (+7d) |  |  |
| 1 | **Excavation** |  | 2026-10-21 → 2026-10-28 (+7d) |  |  |
| SDR-2-CON-TE-ZA-3420 | Excavation for Telecom Manholes |  | 2026-10-21 → 2026-10-28 (+7d) | 30% → 50% | 13.81d → 7.81d |
| 2 | **Bedding Work** | 2026-10-21 → 2026-10-28 (+7d) | 2026-11-14 → 2026-11-21 (+7d) |  |  |
| SDR-2-CON-TE-ZA-3470 | Sand bedding for Telecom Manhole | 2026-10-21 → 2026-10-28 (+7d) | 2026-11-14 → 2026-11-21 (+7d) |  | 13.81d → 7.81d |
| 3 | **Install Manholes** | 2026-11-14 → 2026-11-21 (+7d) | 2026-12-07 → 2026-12-14 (+7d) |  |  |
| SDR-2-CON-TE-ZA-3430 | Installation of Telecom Manhole | 2026-11-14 → 2026-11-21 (+7d) | 2026-12-07 → 2026-12-14 (+7d) |  | 13.81d → 7.81d |
| 4 | **Testting** | 2026-12-07 → 2026-12-14 (+7d) | 2026-12-31 → 2027-01-07 (+7d) |  |  |

| ID | Task | Start | Finish | Complete | Total float |
| --- | --- | --- | --- | --- | --- |
| SDR-2-CON-TE-ZA-3440 | Telecom Manhole finishing works | 2026-12-07 → 2026-12-14 (+7d) | 2026-12-31 → 2027-01-07 (+7d) |  | 13.81d → 7.81d |
| 5 | **Backfilling** | 2027-01-12 → 2027-01-19 (+7d) | 2027-02-06 → 2027-02-13 (+7d) |  |  |
| SDR-2-CON-TE-ZA-3450 | Backfilling over Telecom Manhole | 2027-01-12 → 2027-01-19 (+7d) | 2027-02-06 → 2027-02-13 (+7d) |  | 13.81d → 7.81d |
| 13 | **TELECOMMUNICATION IN ( PH2-A-MCC0 )** |  | 2026-12-19 → 2026-12-26 (+7d) |  |  |
| 3 | **Ducts** |  | 2026-12-08 → 2026-12-15 (+7d) |  |  |
| 2 | **Excavation** |  | 2026-10-05 → 2026-10-12 (+7d) |  |  |
| SDR-2-CON-TE-ZA-3480 | Excavation for telecom crossing ducts & trenches |  | 2026-10-05 → 2026-10-12 (+7d) |  | 9d → 3d |
| 5 | **Pipe laying** |  | 2026-10-10 → 2026-10-17 (+7d) |  |  |
| SDR-2-CON-TE-ZA-3490 | HDPE Pipes for Telecom Installation |  | 2026-10-10 → 2026-10-17 (+7d) |  | 21d → 20d |
| 6 | **Backfilling** | 2026-10-11 → 2026-10-18 (+7d) | 2026-11-02 → 2026-11-09 (+7d) |  |  |
| SDR-2-CON-TE-ZA-3500 | Backfilling over HDPE Telecom Pipes | 2026-10-11 → 2026-10-18 (+7d) | 2026-11-02 → 2026-11-09 (+7d) |  | 21d → 20d |
| 7 | **Pulling Cable** | 2026-11-15 → 2026-11-22 (+7d) | 2026-12-08 → 2026-12-15 (+7d) |  |  |
| SDR-2-CON-TE-ZA-3550 | Pulling Cable | 2026-11-15 → 2026-11-22 (+7d) | 2026-12-08 → 2026-12-15 (+7d) |  | 21d → 20d |
| 4 | **Manholes** |  | 2026-12-19 → 2026-12-26 (+7d) |  |  |
| 2 | **Bedding Work** |  | 2026-10-18 → 2026-10-25 (+7d) |  |  |
| SDR-2-CON-TE-ZA-3560 | Sand bedding for Telecom Manhole |  | 2026-10-18 → 2026-10-25 (+7d) | 30% → 35% | 12.81d → 11.81d |
| 3 | **Install Manholes** |  | 2026-11-09 → 2026-11-16 (+7d) |  |  |
| SDR-2-CON-TE-ZA-3520 | Installation of Telecom Manhole |  | 2026-11-09 → 2026-11-16 (+7d) | 30% → 35% | 12.81d → 11.81d |
| 4 | **Testting** | 2026-11-09 → 2026-11-16 (+7d) | 2026-11-25 → 2026-12-02 (+7d) |  |  |
| SDR-2-CON-TE-ZA-3530 | Telecom Manhole finishing works | 2026-11-09 → 2026-11-16 (+7d) | 2026-11-25 → 2026-12-02 (+7d) |  | 12.81d → 11.81d |
| 5 | **Backfilling** | 2026-11-25 → 2026-12-02 (+7d) | 2026-12-19 → 2026-12-26 (+7d) |  |  |
| SDR-2-CON-TE-ZA-3540 | Backfilling over Telecom Manhole | 2026-11-25 → 2026-12-02 (+7d) | 2026-12-19 → 2026-12-26 (+7d) |  | 12.81d → 11.81d |
| 14 | **TELECOMMUNICATION IN ( PH2-A-MCD0 )** |  | 2026-12-29 → 2027-01-05 (+7d) |  |  |
| 3 | **Ducts** |  | 2026-11-24 → 2026-12-01 (+7d) |  |  |
| 2 | **Excavation** |  | 2026-10-05 → 2026-10-12 (+7d) |  |  |
| SDR-2-CON-TE-ZA-3570 | Excavation for telecom crossing ducts & trenches |  | 2026-10-05 → 2026-10-12 (+7d) |  | 9d → 3d |
| 5 | **Pipe laying** |  | 2026-10-10 → 2026-10-17 (+7d) |  |  |
| SDR-2-CON-TE-ZA-3580 | HDPE Pipes for Telecom Installation |  | 2026-10-10 → 2026-10-17 (+7d) |  | 123d → 117d |
| 6 | **Backfilling** | 2026-10-11 → 2026-10-18 (+7d) | 2026-10-31 → 2026-11-07 (+7d) |  |  |
| SDR-2-CON-TE-ZA-3590 | Backfilling over HDPE Telecom Pipes | 2026-10-11 → 2026-10-18 (+7d) | 2026-10-31 → 2026-11-07 (+7d) |  | 123d → 117d |
| 7 | **Pulling Cable** | 2026-11-01 → 2026-11-08 (+7d) | 2026-11-24 → 2026-12-01 (+7d) |  |  |
| SDR-2-CON-TE-ZA-3640 | Pulling Cable | 2026-11-01 → 2026-11-08 (+7d) | 2026-11-24 → 2026-12-01 (+7d) |  | 123d → 117d |
| 4 | **Manholes** |  | 2026-12-29 → 2027-01-05 (+7d) |  |  |
| 2 | **Bedding Work** |  | 2026-10-22 → 2026-10-29 (+7d) |  |  |
| SDR-2-CON-TE-ZA-3650 | Sand bedding for Telecom Manhole |  | 2026-10-22 → 2026-10-29 (+7d) | 30% → 35% | 43.81d → 37.81d |
| 3 | **Install Manholes** |  | 2026-11-16 → 2026-11-23 (+7d) |  |  |
| SDR-2-CON-TE-ZA-3610 | Installation of Telecom Manhole |  | 2026-11-16 → 2026-11-23 (+7d) | 30% → 35% | 43.81d → 37.81d |
| 4 | **Testting** | 2026-11-22 → 2026-11-29 (+7d) | 2026-12-05 → 2026-12-12 (+7d) |  |  |
| SDR-2-CON-TE-ZA-3620 | Telecom Manhole finishing works | 2026-11-22 → 2026-11-29 (+7d) | 2026-12-05 → 2026-12-12 (+7d) |  | 39d → 33d |
| 5 | **Backfilling** | 2026-12-06 → 2026-12-13 (+7d) | 2026-12-29 → 2027-01-05 (+7d) |  |  |
| SDR-2-CON-TE-ZA-3630 | Backfilling over Telecom Manhole | 2026-12-06 → 2026-12-13 (+7d) | 2026-12-29 → 2027-01-05 (+7d) |  | 39d → 33d |
| 5 | **TELECOMMUNICATION IN ( PH2-A-MCE0 )** |  | 2027-01-20 → 2027-01-27 (+7d) |  |  |
| 3 | **Ducts** |  | 2026-11-23 → 2026-11-30 (+7d) |  |  |
| 2 | **Excavation** |  | 2026-10-05 → 2026-10-12 (+7d) |  |  |
| SDR-2-CON-TE-ZA-3660 | Excavation for telecom crossing ducts & trenches |  | 2026-10-05 → 2026-10-12 (+7d) |  | 9d → 3d |
| 5 | **Pipe laying** |  | 2026-10-05 → 2026-10-12 (+7d) |  |  |
| SDR-2-CON-TE-ZA-3670 | HDPE Pipes for Telecom Installation |  | 2026-10-05 → 2026-10-12 (+7d) |  | 124d → 118d |
| 6 | **Backfilling** | 2026-10-06 → 2026-10-13 (+7d) | 2026-10-29 → 2026-11-05 (+7d) |  |  |
| SDR-2-CON-TE-ZA-3680 | Backfilling over HDPE Telecom Pipes | 2026-10-06 → 2026-10-13 (+7d) | 2026-10-29 → 2026-11-05 (+7d) |  | 124d → 118d |
| 7 | **Pulling Cable** | 2026-10-31 → 2026-11-07 (+7d) | 2026-11-23 → 2026-11-30 (+7d) |  |  |
| SDR-2-CON-TE-ZA-3730 | Pulling Cable | 2026-10-31 → 2026-11-07 (+7d) | 2026-11-23 → 2026-11-30 (+7d) |  | 124d → 118d |
| 4 | **Manholes** | 2026-10-05 → 2026-10-12 (+7d) | 2027-01-20 → 2027-01-27 (+7d) |  |  |
| 1 | **Excavation** | 2026-10-05 → 2026-10-12 (+7d) | 2026-10-28 → 2026-11-04 (+7d) |  |  |
| SDR-2-CON-TE-ZA-3690 | Excavation for Telecom Manholes | 2026-10-05 → 2026-10-12 (+7d) | 2026-10-28 → 2026-11-04 (+7d) |  | 10d → 4d |
| 2 | **Bedding Work** | 2026-10-29 → 2026-11-05 (+7d) | 2026-11-21 → 2026-11-28 (+7d) |  |  |
| SDR-2-CON-TE-ZA-3740 | Sand bedding for Telecom Manhole | 2026-10-29 → 2026-11-05 (+7d) | 2026-11-21 → 2026-11-28 (+7d) |  | 10d → 4d |
| 3 | **Install Manholes** | 2026-11-22 → 2026-11-29 (+7d) | 2026-12-14 → 2026-12-21 (+7d) |  |  |
| SDR-2-CON-TE-ZA-3700 | Installation of Telecom Manhole | 2026-11-22 → 2026-11-29 (+7d) | 2026-12-14 → 2026-12-21 (+7d) |  | 10d → 4d |
| 4 | **Testting** | 2026-12-15 → 2026-12-22 (+7d) | 2026-12-28 → 2027-01-04 (+7d) |  |  |
| SDR-2-CON-TE-ZA-3710 | Telecom Manhole finishing works | 2026-12-15 → 2026-12-22 (+7d) | 2026-12-28 → 2027-01-04 (+7d) |  | 10d → 4d |
| 5 | **Backfilling** | 2026-12-29 → 2027-01-05 (+7d) | 2027-01-20 → 2027-01-27 (+7d) |  |  |
| SDR-2-CON-TE-ZA-3720 | Backfilling over Telecom Manhole | 2026-12-29 → 2027-01-05 (+7d) | 2027-01-20 → 2027-01-27 (+7d) |  | 10d → 4d |
| 6 | **TELECOMMUNICATION IN ( PH2-A-MCF0 )** |  | 2027-01-21 → 2027-01-28 (+7d) |  |  |
| 3 | **Ducts** |  | 2026-11-22 → 2026-11-29 (+7d) |  |  |
| 2 | **Excavation** |  | 2026-10-05 → 2026-10-12 (+7d) |  |  |
| SDR-2-CON-TE-ZA-3750 | Excavation for telecom crossing ducts & trenches |  | 2026-10-05 → 2026-10-12 (+7d) |  | 9d → 3d |
| 5 | **Pipe laying** |  | 2026-10-05 → 2026-10-12 (+7d) |  |  |
| SDR-2-CON-TE-ZA-3760 | HDPE Pipes for Telecom Installation |  | 2026-10-05 → 2026-10-12 (+7d) |  | 61d → 55d |
| 6 | **Backfilling** | 2026-10-06 → 2026-10-13 (+7d) | 2026-10-29 → 2026-11-05 (+7d) |  |  |
| SDR-2-CON-TE-ZA-3770 | Backfilling over HDPE Telecom Pipes | 2026-10-06 → 2026-10-13 (+7d) | 2026-10-29 → 2026-11-05 (+7d) |  | 61d → 55d |

| ID | Task | Start | Finish | Total float |
| --- | --- | --- | --- | --- |
| 7 | **Pulling Cable** | 2026-10-31 → 2026-11-07 (+7d) | 2026-11-22 → 2026-11-29 (+7d) |  |
| SDR-2-CON-TE-ZA-3820 | Pulling Cable | 2026-10-31 → 2026-11-07 (+7d) | 2026-11-22 → 2026-11-29 (+7d) | 61d → 55d |
| 4 | **Manholes** | 2026-10-05 → 2026-10-12 (+7d) | 2027-01-21 → 2027-01-28 (+7d) |  |
| 1 | **Excavation** | 2026-10-05 → 2026-10-12 (+7d) | 2026-10-28 → 2026-11-04 (+7d) |  |
| SDR-2-CON-TE-ZA-3780 | Excavation for Telecom Manholes | 2026-10-05 → 2026-10-12 (+7d) | 2026-10-28 → 2026-11-04 (+7d) | 9d → 3d |
| 2 | **Bedding Work** | 2026-10-29 → 2026-11-05 (+7d) | 2026-11-21 → 2026-11-28 (+7d) |  |
| SDR-2-CON-TE-ZA-3830 | Sand bedding for Telecom Manhole | 2026-10-29 → 2026-11-05 (+7d) | 2026-11-21 → 2026-11-28 (+7d) | 9d → 3d |
| 3 | **Install Manholes** | 2026-11-22 → 2026-11-29 (+7d) | 2026-12-14 → 2026-12-21 (+7d) |  |
| SDR-2-CON-TE-ZA-3790 | Installation of Telecom Manhole | 2026-11-22 → 2026-11-29 (+7d) | 2026-12-14 → 2026-12-21 (+7d) | 9d → 3d |
| 4 | **Testting** | 2026-12-15 → 2026-12-22 (+7d) | 2026-12-28 → 2027-01-04 (+7d) |  |
| SDR-2-CON-TE-ZA-3800 | Telecom Manhole finishing works | 2026-12-15 → 2026-12-22 (+7d) | 2026-12-28 → 2027-01-04 (+7d) | 9d → 3d |
| 5 | **Backfilling** | 2026-12-29 → 2027-01-05 (+7d) | 2027-01-21 → 2027-01-28 (+7d) |  |
| SDR-2-CON-TE-ZA-3810 | Backfilling over Telecom Manhole | 2026-12-29 → 2027-01-05 (+7d) | 2027-01-21 → 2027-01-28 (+7d) | 9d → 3d |
| 7 | **TELECOMMUNICATION IN ( PH2-A-MCG0 )** |  | 2027-01-20 → 2027-01-27 (+7d) |  |
| 3 | **Ducts** |  | 2026-12-02 → 2026-12-09 (+7d) |  |
| 2 | **Excavation** |  | 2026-10-05 → 2026-10-12 (+7d) |  |
| SDR-2-CON-TE-ZA-3840 | Excavation for telecom crossing ducts & trenches |  | 2026-10-05 → 2026-10-12 (+7d) | 10d → 4d |
| 5 | **Pipe laying** |  | 2026-10-05 → 2026-10-12 (+7d) |  |
| SDR-2-CON-TE-ZA-3850 | HDPE Pipes for Telecom Installation |  | 2026-10-05 → 2026-10-12 (+7d) | 52d → 46d |
| 6 | **Backfilling** | 2026-10-06 → 2026-10-13 (+7d) | 2026-10-28 → 2026-11-04 (+7d) |  |
| SDR-2-CON-TE-ZA-3860 | Backfilling over HDPE Telecom Pipes | 2026-10-06 → 2026-10-13 (+7d) | 2026-10-28 → 2026-11-04 (+7d) | 52d → 46d |
| 7 | **Pulling Cable** | 2026-11-09 → 2026-11-16 (+7d) | 2026-12-02 → 2026-12-09 (+7d) |  |
| SDR-2-CON-TE-ZA-3910 | Pulling Cable | 2026-11-09 → 2026-11-16 (+7d) | 2026-12-02 → 2026-12-09 (+7d) | 52d → 46d |
| 4 | **Manholes** | 2026-10-05 → 2026-10-12 (+7d) | 2027-01-20 → 2027-01-27 (+7d) |  |
| 1 | **Excavation** | 2026-10-05 → 2026-10-12 (+7d) | 2026-10-28 → 2026-11-04 (+7d) |  |
| SDR-2-CON-TE-ZA-3870 | Excavation for Telecom Manholes | 2026-10-05 → 2026-10-12 (+7d) | 2026-10-28 → 2026-11-04 (+7d) | 10d → 4d |
| 2 | **Bedding Work** | 2026-10-29 → 2026-11-05 (+7d) | 2026-11-21 → 2026-11-28 (+7d) |  |
| SDR-2-CON-TE-ZA-3920 | Sand bedding for Telecom Manhole | 2026-10-29 → 2026-11-05 (+7d) | 2026-11-21 → 2026-11-28 (+7d) | 10d → 4d |
| 3 | **Install Manholes** | 2026-11-22 → 2026-11-29 (+7d) | 2026-12-14 → 2026-12-21 (+7d) |  |
| SDR-2-CON-TE-ZA-3880 | Installation of Telecom Manhole | 2026-11-22 → 2026-11-29 (+7d) | 2026-12-14 → 2026-12-21 (+7d) | 10d → 4d |
| 4 | **Testting** | 2026-12-15 → 2026-12-22 (+7d) | 2026-12-28 → 2027-01-04 (+7d) |  |
| SDR-2-CON-TE-ZA-3890 | Telecom Manhole finishing works | 2026-12-15 → 2026-12-22 (+7d) | 2026-12-28 → 2027-01-04 (+7d) | 10d → 4d |
| 5 | **Backfilling** | 2026-12-29 → 2027-01-05 (+7d) | 2027-01-20 → 2027-01-27 (+7d) |  |
| SDR-2-CON-TE-ZA-3900 | Backfilling over Telecom Manhole | 2026-12-29 → 2027-01-05 (+7d) | 2027-01-20 → 2027-01-27 (+7d) | 10d → 4d |
| 8 | **TELECOMMUNICATION IN ( PH2-A-MCH0 )** |  | 2027-01-18 → 2027-01-25 (+7d) |  |
| 3 | **Ducts** |  | 2026-12-15 → 2026-12-22 (+7d) |  |
| 2 | **Excavation** |  | 2026-10-05 → 2026-10-12 (+7d) |  |
| SDR-2-CON-TE-ZA-3930 | Excavation for telecom crossing ducts & trenches |  | 2026-10-05 → 2026-10-12 (+7d) | 12d → 6d |
| 5 | **Pipe laying** | 2026-10-06 → 2026-10-13 (+7d) | 2026-10-28 → 2026-11-04 (+7d) |  |
| SDR-2-CON-TE-ZA-3940 | HDPE Pipes for Telecom Installation | 2026-10-06 → 2026-10-13 (+7d) | 2026-10-28 → 2026-11-04 (+7d) | 41d → 35d |
| 6 | **Backfilling** | 2026-10-29 → 2026-11-05 (+7d) | 2026-11-21 → 2026-11-28 (+7d) |  |
| SDR-2-CON-TE-ZA-3950 | Backfilling over HDPE Telecom Pipes | 2026-10-29 → 2026-11-05 (+7d) | 2026-11-21 → 2026-11-28 (+7d) | 41d → 35d |
| 7 | **Pulling Cable** | 2026-11-22 → 2026-11-29 (+7d) | 2026-12-15 → 2026-12-22 (+7d) |  |
| SDR-2-CON-TE-ZA-4000 | Pulling Cable | 2026-11-22 → 2026-11-29 (+7d) | 2026-12-15 → 2026-12-22 (+7d) | 41d → 35d |
| 4 | **Manholes** | 2026-10-05 → 2026-10-12 (+7d) | 2027-01-18 → 2027-01-25 (+7d) |  |
| 1 | **Excavation** | 2026-10-05 → 2026-10-12 (+7d) | 2026-10-28 → 2026-11-04 (+7d) |  |
| SDR-2-CON-TE-ZA-3960 | Excavation for Telecom Manholes | 2026-10-05 → 2026-10-12 (+7d) | 2026-10-28 → 2026-11-04 (+7d) | 12d → 6d |
| 2 | **Bedding Work** | 2026-10-29 → 2026-11-05 (+7d) | 2026-11-21 → 2026-11-28 (+7d) |  |
| SDR-2-CON-TE-ZA-4010 | Sand bedding for Telecom Manhole | 2026-10-29 → 2026-11-05 (+7d) | 2026-11-21 → 2026-11-28 (+7d) | 12d → 6d |
| 3 | **Install Manholes** | 2026-11-22 → 2026-11-29 (+7d) | 2026-12-14 → 2026-12-21 (+7d) |  |
| SDR-2-CON-TE-ZA-3970 | Installation of Telecom Manhole | 2026-11-22 → 2026-11-29 (+7d) | 2026-12-14 → 2026-12-21 (+7d) | 12d → 6d |
| 4 | **Testting** | 2026-12-15 → 2026-12-22 (+7d) | 2026-12-28 → 2027-01-04 (+7d) |  |
| SDR-2-CON-TE-ZA-3980 | Telecom Manhole finishing works | 2026-12-15 → 2026-12-22 (+7d) | 2026-12-28 → 2027-01-04 (+7d) | 12d → 6d |
| 5 | **Backfilling** | 2026-12-29 → 2027-01-05 (+7d) | 2027-01-18 → 2027-01-25 (+7d) |  |
| SDR-2-CON-TE-ZA-3990 | Backfilling over Telecom Manhole | 2026-12-29 → 2027-01-05 (+7d) | 2027-01-18 → 2027-01-25 (+7d) | 12d → 6d |
| 9 | **TELECOMMUNICATION IN ( PH2-ART-MC00 )** |  | 2027-01-18 → 2027-01-25 (+7d) |  |
| 3 | **Ducts** |  | 2026-12-14 → 2026-12-21 (+7d) |  |
| 2 | **Excavation** |  | 2026-10-05 → 2026-10-12 (+7d) |  |
| SDR-2-CON-TE-ZA-4020 | Excavation for telecom crossing ducts & trenches |  | 2026-10-05 → 2026-10-12 (+7d) | 12d → 6d |
| 5 | **Pipe laying** | 2026-10-06 → 2026-10-13 (+7d) | 2026-10-28 → 2026-11-04 (+7d) |  |
| SDR-2-CON-TE-ZA-4030 | HDPE Pipes for Telecom Installation | 2026-10-06 → 2026-10-13 (+7d) | 2026-10-28 → 2026-11-04 (+7d) | 42d → 36d |
| 6 | **Backfilling** | 2026-10-29 → 2026-11-05 (+7d) | 2026-11-19 → 2026-11-26 (+7d) |  |
| SDR-2-CON-TE-ZA-4040 | Backfilling over HDPE Telecom Pipes | 2026-10-29 → 2026-11-05 (+7d) | 2026-11-19 → 2026-11-26 (+7d) | 42d → 36d |
| 7 | **Pulling Cable** | 2026-11-21 → 2026-11-28 (+7d) | 2026-12-14 → 2026-12-21 (+7d) |  |
| SDR-2-CON-TE-ZA-4090 | Pulling Cable | 2026-11-21 → 2026-11-28 (+7d) | 2026-12-14 → 2026-12-21 (+7d) | 42d → 36d |
| 4 | **Manholes** | 2026-10-05 → 2026-10-12 (+7d) | 2027-01-18 → 2027-01-25 (+7d) |  |
| 1 | **Excavation** | 2026-10-05 → 2026-10-12 (+7d) | 2026-10-28 → 2026-11-04 (+7d) |  |
| SDR-2-CON-TE-ZA-4050 | Excavation for Telecom Manholes | 2026-10-05 → 2026-10-12 (+7d) | 2026-10-28 → 2026-11-04 (+7d) | 12d → 6d |
| 2 | **Bedding Work** | 2026-10-29 → 2026-11-05 (+7d) | 2026-11-21 → 2026-11-28 (+7d) |  |
| SDR-2-CON-TE-ZA-4100 | Sand bedding for Telecom Manhole | 2026-10-29 → 2026-11-05 (+7d) | 2026-11-21 → 2026-11-28 (+7d) | 12d → 6d |

| ID | Task | Start | Finish | Complete | Total float |
| --- | --- | --- | --- | --- | --- |
| 3 | **Install Manholes** | 2026-11-22 → 2026-11-29 (+7d) | 2026-12-14 → 2026-12-21 (+7d) |  |  |
| SDR-2-CON-TE-ZA-4060 | Installation of Telecom Manhole | 2026-11-22 → 2026-11-29 (+7d) | 2026-12-14 → 2026-12-21 (+7d) |  | 12d → 6d |
| 4 | **Testting** | 2026-12-15 → 2026-12-22 (+7d) | 2026-12-28 → 2027-01-04 (+7d) |  |  |
| SDR-2-CON-TE-ZA-4070 | Telecom Manhole finishing works | 2026-12-15 → 2026-12-22 (+7d) | 2026-12-28 → 2027-01-04 (+7d) |  | 12d → 6d |
| 5 | **Backfilling** | 2026-12-29 → 2027-01-05 (+7d) | 2027-01-18 → 2027-01-25 (+7d) |  |  |
| SDR-2-CON-TE-ZA-4080 | Backfilling over Telecom Manhole | 2026-12-29 → 2027-01-05 (+7d) | 2027-01-18 → 2027-01-25 (+7d) |  | 12d → 6d |
| 10 | **TELECOMMUNICATION IN ( PH2-ART-MC10 )** |  | 2026-11-28 → 2026-12-05 (+7d) |  |  |
| 3 | **Ducts** |  | 2026-11-22 → 2026-11-29 (+7d) |  |  |
| 2 | **Excavation** |  | 2026-10-05 → 2026-10-12 (+7d) |  |  |
| SDR-2-CON-TE-ZA-4110 | Excavation for telecom crossing ducts & trenches |  | 2026-10-05 → 2026-10-12 (+7d) |  | 61d → 55d |
| 5 | **Pipe laying** |  | 2026-10-05 → 2026-10-12 (+7d) |  |  |
| SDR-2-CON-TE-ZA-4120 | HDPE Pipes for Telecom Installation |  | 2026-10-05 → 2026-10-12 (+7d) |  | 61d → 55d |
| 6 | **Backfilling** | 2026-10-06 → 2026-10-13 (+7d) | 2026-10-28 → 2026-11-04 (+7d) |  |  |
| SDR-2-CON-TE-ZA-4130 | Backfilling over HDPE Telecom Pipes | 2026-10-06 → 2026-10-13 (+7d) | 2026-10-28 → 2026-11-04 (+7d) |  | 61d → 55d |
| 7 | **Pulling Cable** | 2026-10-29 → 2026-11-05 (+7d) | 2026-11-22 → 2026-11-29 (+7d) |  |  |
| SDR-2-CON-TE-ZA-4180 | Pulling Cable | 2026-10-29 → 2026-11-05 (+7d) | 2026-11-22 → 2026-11-29 (+7d) |  | 61d → 55d |
| 4 | **Manholes** |  | 2026-11-28 → 2026-12-05 (+7d) |  |  |
| 2 | **Bedding Work** |  | 2026-10-21 → 2026-10-28 (+7d) |  |  |
| SDR-2-CON-TE-ZA-4190 | Sand bedding for Telecom Manhole |  | 2026-10-21 → 2026-10-28 (+7d) |  | 56.46d → 50.46d |
| 3 | **Install Manholes** |  | 2026-10-21 → 2026-10-28 (+7d) |  |  |
| SDR-2-CON-TE-ZA-4150 | Installation of Telecom Manhole |  | 2026-10-21 → 2026-10-28 (+7d) |  | 56.46d → 50.46d |
| 4 | **Testting** | 2026-10-21 → 2026-10-28 (+7d) | 2026-11-03 → 2026-11-10 (+7d) |  |  |
| SDR-2-CON-TE-ZA-4160 | Telecom Manhole finishing works | 2026-10-21 → 2026-10-28 (+7d) | 2026-11-03 → 2026-11-10 (+7d) |  | 56.46d → 50.46d |
| 5 | **Backfilling** | 2026-11-03 → 2026-11-10 (+7d) | 2026-11-28 → 2026-12-05 (+7d) |  |  |
| SDR-2-CON-TE-ZA-4170 | Backfilling over Telecom Manhole | 2026-11-03 → 2026-11-10 (+7d) | 2026-11-28 → 2026-12-05 (+7d) |  | 56.46d → 50.46d |
| ZG | **ZONE G** |  | 2027-02-24 → 2027-03-03 (+7d) |  |  |
| 1 | **Street Lighting Network** |  | 2027-02-24 → 2027-03-03 (+7d) |  |  |
| 5 | **Street Lighting IN ( PH2-G-MCA0 )** |  | 2026-11-30 → 2026-12-07 (+7d) |  |  |
| 10 | **Excavation** |  | 2026-10-05 → 2026-10-12 (+7d) |  |  |
| SDR-2-CON-SL-ZA-3230 | Excavation for LV Cable drawpits & trenches |  | 2026-10-05 → 2026-10-12 (+7d) |  | 39d → 48d |
| 11 | **Install Footings** |  | 2026-10-05 → 2026-10-12 (+7d) |  |  |
| SDR-2-CON-SL-ZA-3240 | Install Footings |  | 2026-10-05 → 2026-10-12 (+7d) |  | 64d → 58d |
| 12 | **Backfilling** | 2026-10-06 → 2026-10-13 (+7d) | 2026-10-28 → 2026-11-04 (+7d) |  |  |
| SDR-2-CON-SL-ZA-3260 | Backfilling over LV Cables of Street lighting | 2026-10-06 → 2026-10-13 (+7d) | 2026-10-28 → 2026-11-04 (+7d) |  | 64d → 58d |
| 13 | **Install pole** | 2026-11-07 → 2026-11-14 (+7d) | 2026-11-30 → 2026-12-07 (+7d) |  |  |
| SDR-2-CON-SL-ZA-3250 | Install Pole | 2026-11-07 → 2026-11-14 (+7d) | 2026-11-30 → 2026-12-07 (+7d) |  | 64d → 58d |
| 6 | **Street Lighting IN ( PH2-G-MCE0 )** |  | 2026-12-15 → 2026-12-22 (+7d) |  |  |
| 10 | **Excavation** |  | 2026-10-05 → 2026-10-12 (+7d) |  |  |
| SDR-2-CON-SL-ZA-3270 | Excavation for LV Cable drawpits & trenches |  | 2026-10-05 → 2026-10-12 (+7d) |  | 39d → 34d |
| 11 | **Install Footings** |  | 2026-10-05 → 2026-10-12 (+7d) |  |  |
| SDR-2-CON-SL-ZA-3280 | Install Footings |  | 2026-10-05 → 2026-10-12 (+7d) |  | 40d → 34d |
| 12 | **Backfilling** | 2026-10-06 → 2026-10-13 (+7d) | 2026-10-28 → 2026-11-04 (+7d) |  |  |
| SDR-2-CON-SL-ZA-3300 | Backfilling over LV Cables of Street lighting | 2026-10-06 → 2026-10-13 (+7d) | 2026-10-28 → 2026-11-04 (+7d) |  | 40d → 34d |
| 13 | **Install pole** | 2026-11-22 → 2026-11-29 (+7d) | 2026-12-15 → 2026-12-22 (+7d) |  |  |
| SDR-2-CON-SL-ZA-3290 | Install Pole | 2026-11-22 → 2026-11-29 (+7d) | 2026-12-15 → 2026-12-22 (+7d) |  | 30d → 24d |
| 7 | **Street Lighting IN ( PH2-G-MCF0 )** |  | 2026-12-03 → 2026-12-10 (+7d) |  |  |
| 10 | **Excavation** |  | 2026-10-05 → 2026-10-12 (+7d) |  |  |
| SDR-2-CON-SL-ZA-3310 | Excavation for LV Cable drawpits & trenches |  | 2026-10-05 → 2026-10-12 (+7d) |  | 39d → 48d |
| 11 | **Install Footings** |  | 2026-10-05 → 2026-10-12 (+7d) |  |  |
| SDR-2-CON-SL-ZA-3320 | Install Footings |  | 2026-10-05 → 2026-10-12 (+7d) |  | 51d → 90d |
| 12 | **Backfilling** | 2026-10-06 → 2026-10-13 (+7d) | 2026-10-28 → 2026-11-04 (+7d) |  |  |
| SDR-2-CON-SL-ZA-3340 | Backfilling over LV Cables of Street lighting | 2026-10-06 → 2026-10-13 (+7d) | 2026-10-28 → 2026-11-04 (+7d) |  | 51d → 90d |
| 13 | **Install pole** | 2026-11-10 → 2026-11-17 (+7d) | 2026-12-03 → 2026-12-10 (+7d) |  |  |
| SDR-2-CON-SL-ZA-3330 | Install Pole | 2026-11-10 → 2026-11-17 (+7d) | 2026-12-03 → 2026-12-10 (+7d) |  | 51d → 90d |
| 4 | **Street Lighting IN ( PH2-G-MCG0 )** |  | 2026-12-03 → 2026-12-10 (+7d) |  |  |
| 10 | **Excavation** |  | 2026-10-05 → 2026-10-12 (+7d) |  |  |
| SDR-2-CON-SL-ZA-3350 | Excavation for LV Cable drawpits & trenches |  | 2026-10-05 → 2026-10-12 (+7d) |  | 39d → 48d |
| 11 | **Install Footings** |  | 2026-10-05 → 2026-10-12 (+7d) |  |  |
| SDR-2-CON-SL-ZA-3360 | Install Footings |  | 2026-10-05 → 2026-10-12 (+7d) |  | 51d → 90d |
| 12 | **Backfilling** |  | 2026-10-28 → 2026-11-04 (+7d) |  |  |
| SDR-2-CON-SL-ZA-3380 | Backfilling over LV Cables of Street lighting | 2026-10-06 A | 2026-10-28 → 2026-11-04 (+7d) | 0% → 25% | 51d → 90d |
| 13 | **Install pole** | 2026-11-10 → 2026-11-17 (+7d) | 2026-12-03 → 2026-12-10 (+7d) |  |  |
| SDR-2-CON-SL-ZA-3370 | Install Pole | 2026-11-10 → 2026-11-17 (+7d) | 2026-12-03 → 2026-12-10 (+7d) |  | 51d → 90d |
| 1 | **Street Lighting IN ( PH2-G-MCZ0 )** |  | 2026-10-05 → 2026-10-12 (+7d) |  |  |
| 10 | **Excavation** |  | 2026-10-05 → 2026-10-12 (+7d) |  |  |
| SDR-2-CON-SL-ZA-3390 | Excavation for LV Cable drawpits & trenches |  | 2026-10-05 → 2026-10-12 (+7d) |  | 39d → 48d |
| 11 | **Install Footings** |  | 2026-10-05 → 2026-10-12 (+7d) |  |  |
| SDR-2-CON-SL-ZA-3400 | Install Footings |  | 2026-10-05 → 2026-10-12 (+7d) |  | 102d → 117d |
| 12 | **Backfilling** |  | 2026-10-05 → 2026-10-12 (+7d) |  |  |
| SDR-2-CON-SL-ZA-3420 | Backfilling over LV Cables of Street lighting |  | 2026-10-05 → 2026-10-12 (+7d) |  | 102d → 117d |

| ID | Task | Start | Finish | Complete | Total float |
| --- | --- | --- | --- | --- | --- |
| 13 | **Install pole** |  | 2026-10-05 → 2026-10-12 (+7d) |  |  |
| SDR-2-CON-SL-ZA-3410 | Install Pole |  | 2026-10-05 → 2026-10-12 (+7d) |  | 102d → 117d |
| 10 | **Lighting Pole Panels** | 2026-10-05 → 2026-10-12 (+7d) | 2027-01-06 → 2027-01-13 (+7d) |  |  |
| 1 | **Excavation** | 2026-10-05 → 2026-10-12 (+7d) | 2026-10-28 → 2026-11-04 (+7d) |  |  |
| SDR-2-CON-SL-ZA-3430 | Street Lighting Panels Excavation | 2026-10-05 → 2026-10-12 (+7d) | 2026-10-28 → 2026-11-04 (+7d) |  | 39d → 48d |
| 2 | **Install Footings** | 2026-10-29 → 2026-11-05 (+7d) | 2026-11-19 → 2026-11-26 (+7d) |  |  |
| SDR-2-CON-SL-ZA-3440 | Installation Footings Street Lighting Panels | 2026-10-29 → 2026-11-05 (+7d) | 2026-11-19 → 2026-11-26 (+7d) |  | 86d → 80d |
| 3 | **Backfilling** | 2026-11-21 → 2026-11-28 (+7d) | 2026-12-13 → 2026-12-20 (+7d) |  |  |
| SDR-2-CON-SL-ZA-3450 | Street Lighting Panels Backfilling | 2026-11-21 → 2026-11-28 (+7d) | 2026-12-13 → 2026-12-20 (+7d) |  | 86d → 80d |
| 4 | **Install pole** | 2026-12-14 → 2026-12-21 (+7d) | 2027-01-06 → 2027-01-13 (+7d) |  |  |
| SDR-2-CON-SL-ZA-3460 | Street Lighting Panels Installation | 2026-12-14 → 2026-12-21 (+7d) | 2027-01-06 → 2027-01-13 (+7d) |  | 86d → 80d |
| 11 | **Ring Main Unit** | 2026-10-29 → 2026-11-05 (+7d) | 2027-01-02 → 2027-01-09 (+7d) |  |  |
| 1 | **Leveling** | 2026-10-29 → 2026-11-05 (+7d) | 2026-11-21 → 2026-11-28 (+7d) |  |  |
| SDR-2-CON-SL-ZA-3470 | Ring Main Unit leveling | 2026-10-29 → 2026-11-05 (+7d) | 2026-11-21 → 2026-11-28 (+7d) |  | 39d → 48d |
| 2 | **Lean Concrete** | 2026-11-22 → 2026-11-29 (+7d) | 2026-12-09 → 2026-12-16 (+7d) |  |  |
| SDR-2-CON-SL-ZA-3480 | Ring Main Unit Lean Concrete | 2026-11-22 → 2026-11-29 (+7d) | 2026-12-09 → 2026-12-16 (+7d) |  | 39d → 48d |
| 3 | **Installation** | 2026-12-10 → 2026-12-17 (+7d) | 2027-01-02 → 2027-01-09 (+7d) |  |  |
| SDR-2-CON-SL-ZA-3490 | Ring Main Unit installation for Street Lighting | 2026-12-10 → 2026-12-17 (+7d) | 2027-01-02 → 2027-01-09 (+7d) |  | 39d → 48d |
| 12 | **Feeder Pillars** | 2026-11-01 → 2026-11-08 (+7d) | 2027-01-09 → 2027-01-16 (+7d) |  |  |
| 1 | **Leveling** | 2026-11-01 → 2026-11-08 (+7d) | 2026-11-23 → 2026-11-30 (+7d) |  |  |
| SDR-2-CON-SL-ZA-3500 | Feeder Pillars Leveling | 2026-11-01 → 2026-11-08 (+7d) | 2026-11-23 → 2026-11-30 (+7d) |  | 41d → 35d |
| 2 | **Lean Concrete** | 2026-11-24 → 2026-12-01 (+7d) | 2026-12-16 → 2026-12-23 (+7d) |  |  |
| SDR-2-CON-SL-ZA-3510 | Feeder Pillars Lean Concrete | 2026-11-24 → 2026-12-01 (+7d) | 2026-12-16 → 2026-12-23 (+7d) |  | 41d → 35d |
| 3 | **Installation** | 2026-12-17 → 2026-12-24 (+7d) | 2027-01-09 → 2027-01-16 (+7d) |  |  |
| SDR-2-CON-SL-ZA-3520 | Feeder Pillars Installation | 2026-12-17 → 2026-12-24 (+7d) | 2027-01-09 → 2027-01-16 (+7d) |  | 41d → 35d |
| 13 | **KWH Frame** | 2026-12-05 → 2026-12-12 (+7d) | 2027-02-11 → 2027-02-18 (+7d) |  |  |
| 1 | **Leveling** | 2026-12-05 → 2026-12-12 (+7d) | 2026-12-27 → 2027-01-03 (+7d) |  |  |
| SDR-2-CON-SL-ZA-3530 | KWH meter mounting frame Leveling | 2026-12-05 → 2026-12-12 (+7d) | 2026-12-27 → 2027-01-03 (+7d) |  | 18d → 12d |
| 2 | **Lean Concrete** | 2026-12-28 → 2027-01-04 (+7d) | 2027-01-19 → 2027-01-26 (+7d) |  |  |
| SDR-2-CON-SL-ZA-3540 | KWH meter mounting frame Lean Concrete | 2026-12-28 → 2027-01-04 (+7d) | 2027-01-19 → 2027-01-26 (+7d) |  | 18d → 12d |
| 3 | **Installation** | 2027-01-20 → 2027-01-27 (+7d) | 2027-02-11 → 2027-02-18 (+7d) |  |  |
| SDR-2-CON-SL-ZA-3550 | KWH meter mounting frame installation | 2027-01-20 → 2027-01-27 (+7d) | 2027-02-11 → 2027-02-18 (+7d) |  | 18d → 12d |
| 14 | **Street Lighting Sub-station** | 2026-12-06 → 2026-12-13 (+7d) | 2027-02-24 → 2027-03-03 (+7d) |  |  |
| 1 | **Leveling** | 2026-12-06 → 2026-12-13 (+7d) | 2026-12-28 → 2027-01-04 (+7d) |  |  |
| SDR-2-CON-SL-ZA-3560 | Unit Substation Leveling | 2026-12-06 → 2026-12-13 (+7d) | 2026-12-28 → 2027-01-04 (+7d) |  | 8d → 2d |
| 2 | **Lean Concrete** | 2026-12-29 → 2027-01-05 (+7d) | 2027-01-19 → 2027-01-26 (+7d) |  |  |
| SDR-2-CON-SL-ZA-3570 | Unit Substation Lean Concrete | 2026-12-29 → 2027-01-05 (+7d) | 2027-01-19 → 2027-01-26 (+7d) |  | 8d → 2d |
| 3 | **Installation** | 2027-02-01 → 2027-02-08 (+7d) | 2027-02-24 → 2027-03-03 (+7d) |  |  |
| SDR-2-CON-SL-ZA-3580 | Unit Substation Install for Street Lighting | 2027-02-01 → 2027-02-08 (+7d) | 2027-02-24 → 2027-03-03 (+7d) |  | 8d → 2d |
| 2 | **MV Network** |  | 2026-11-09 → 2026-11-16 (+7d) |  |  |
| 1 | **LOOP 1** |  | 2026-11-09 → 2026-11-16 (+7d) |  |  |
| 6 | **Excavation** |  | 2026-10-05 → 2026-10-12 (+7d) |  |  |
| SDR-2-CON-MV-ZA-1280 | Excavation Works |  | 2026-10-05 → 2026-10-12 (+7d) |  | 68d → 62d |
| 7 | **Pipe laying** |  | 2026-10-05 → 2026-10-12 (+7d) |  |  |
| SDR-2-CON-MV-ZA-1290 | Pipe Laying |  | 2026-10-05 → 2026-10-12 (+7d) |  | 72d → 66d |
| 8 | **Backfilling** |  | 2026-10-05 → 2026-10-12 (+7d) |  |  |
| SDR-2-CON-MV-ZA-1310 | Backfilling Works |  | 2026-10-05 → 2026-10-12 (+7d) |  | 72d → 66d |
| 9 | **Pulling Cable** | 2026-10-18 → 2026-10-25 (+7d) | 2026-11-09 → 2026-11-16 (+7d) |  |  |
| SDR-2-CON-MV-ZA-1300 | Pulling Cable | 2026-10-18 → 2026-10-25 (+7d) | 2026-11-09 → 2026-11-16 (+7d) |  | 72d → 66d |
| 2 | **LOOP 2** |  | 2026-11-09 → 2026-11-16 (+7d) |  |  |
| 6 | **Excavation** |  | 2026-10-05 → 2026-10-12 (+7d) |  |  |
| SDR-2-CON-MV-ZA-1320 | Excavation Works |  | 2026-10-05 → 2026-10-12 (+7d) |  | 68d → 62d |
| 7 | **Pipe laying** |  | 2026-10-05 → 2026-10-12 (+7d) |  |  |
| SDR-2-CON-MV-ZA-1330 | Pipe Laying |  | 2026-10-05 → 2026-10-12 (+7d) |  | 68d → 62d |
| 8 | **Backfilling** |  | 2026-10-05 → 2026-10-12 (+7d) |  |  |
| SDR-2-CON-MV-ZA-1350 | Backfilling Works |  | 2026-10-05 → 2026-10-12 (+7d) |  | 68d → 62d |
| 9 | **Pulling Cable** | 2026-10-18 → 2026-10-25 (+7d) | 2026-11-09 → 2026-11-16 (+7d) |  |  |
| SDR-2-CON-MV-ZA-1340 | Pulling Cable | 2026-10-18 → 2026-10-25 (+7d) | 2026-11-09 → 2026-11-16 (+7d) |  | 68d → 62d |
| 3 | **TELECOMMUNICATIONS Works** |  | 2026-11-21 → 2026-11-28 (+7d) |  |  |
| 5 | **TELECOMMUNICATION IN ( PH2-G-MCA0 )** |  | 2026-11-21 → 2026-11-28 (+7d) |  |  |
| 3 | **Ducts** |  | 2026-11-21 → 2026-11-28 (+7d) |  |  |
| 2 | **Excavation** |  | 2026-10-05 → 2026-10-12 (+7d) |  |  |
| SDR-2-CON-TE-ZA-4200 | Excavation for telecom crossing ducts & trenches |  | 2026-10-05 → 2026-10-12 (+7d) | 52% → 53% | 58d → 52d |
| 5 | **Pipe laying** |  | 2026-10-05 → 2026-10-12 (+7d) |  |  |
| SDR-2-CON-TE-ZA-4210 | HDPE Pipes for Telecom Installation |  | 2026-10-05 → 2026-10-12 (+7d) |  | 58d → 52d |
| 6 | **Backfilling** | 2026-10-06 → 2026-10-13 (+7d) | 2026-10-28 → 2026-11-04 (+7d) |  |  |
| SDR-2-CON-TE-ZA-4220 | Backfilling over HDPE Telecom Pipes | 2026-10-06 → 2026-10-13 (+7d) | 2026-10-28 → 2026-11-04 (+7d) |  | 58d → 52d |
| 7 | **Pulling Cable** | 2026-10-29 → 2026-11-05 (+7d) | 2026-11-21 → 2026-11-28 (+7d) |  |  |
| SDR-2-CON-TE-ZA-4270 | Pulling Cable | 2026-10-29 → 2026-11-05 (+7d) | 2026-11-21 → 2026-11-28 (+7d) |  | 58d → 52d |
| 4 | **Manholes** |  | 2026-10-28 → 2026-11-04 (+7d) |  |  |

| ID | Task | Start | Finish | Total float |
| --- | --- | --- | --- | --- |
| 1 | **Excavation** |  | 2026-10-05 → 2026-10-12 (+7d) |  |
| SDR-2-CON-TE-ZA-4230 | Excavation for Telecom Manholes |  | 2026-10-05 → 2026-10-12 (+7d) | 78d → 72d |
| 2 | **Bedding Work** |  | 2026-10-05 → 2026-10-12 (+7d) |  |
| SDR-2-CON-TE-ZA-4280 | Sand bedding for Telecom Manhole |  | 2026-10-05 → 2026-10-12 (+7d) | 78d → 72d |
| 3 | **Install Manholes** |  | 2026-10-05 → 2026-10-12 (+7d) |  |
| SDR-2-CON-TE-ZA-4240 | Installation of Telecom Manhole |  | 2026-10-05 → 2026-10-12 (+7d) | 78d → 72d |
| 4 | **Testting** |  | 2026-10-05 → 2026-10-12 (+7d) |  |
| SDR-2-CON-TE-ZA-4250 | Telecom Manhole finishing works |  | 2026-10-05 → 2026-10-12 (+7d) | 78d → 72d |
| 5 | **Backfilling** | 2026-10-06 → 2026-10-13 (+7d) | 2026-10-28 → 2026-11-04 (+7d) |  |
| SDR-2-CON-TE-ZA-4260 | Backfilling over Telecom Manhole | 2026-10-06 → 2026-10-13 (+7d) | 2026-10-28 → 2026-11-04 (+7d) | 78d → 72d |
| 6 | **TELECOMMUNICATION IN ( PH2-G-MCE0 )** |  | 2026-11-07 → 2026-11-14 (+7d) |  |
| 3 | **Ducts** |  | 2026-10-05 → 2026-10-12 (+7d) |  |
| 5 | **Pipe laying** |  | 2026-10-05 → 2026-10-12 (+7d) |  |
| SDR-2-CON-TE-ZA-4300 | HDPE Pipes for Telecom Installation |  | 2026-10-05 → 2026-10-12 (+7d) | 77d → 76d |
| 6 | **Backfilling** |  | 2026-10-05 → 2026-10-12 (+7d) |  |
| SDR-2-CON-TE-ZA-4310 | Backfilling over HDPE Telecom Pipes |  | 2026-10-05 → 2026-10-12 (+7d) | 77d → 76d |
| 7 | **Pulling Cable** |  | 2026-10-05 → 2026-10-12 (+7d) |  |
| SDR-2-CON-TE-ZA-4360 | Pulling Cable |  | 2026-10-05 → 2026-10-12 (+7d) | 77d → 76d |
| 4 | **Manholes** |  | 2026-11-07 → 2026-11-14 (+7d) |  |
| 1 | **Excavation** |  | 2026-10-05 → 2026-10-12 (+7d) |  |
| SDR-2-CON-TE-ZA-4320 | Excavation for Telecom Manholes |  | 2026-10-05 → 2026-10-12 (+7d) | 70d → 64d |
| 2 | **Bedding Work** |  | 2026-10-05 → 2026-10-12 (+7d) |  |
| SDR-2-CON-TE-ZA-4370 | Sand bedding for Telecom Manhole |  | 2026-10-05 → 2026-10-12 (+7d) | 70d → 64d |
| 3 | **Install Manholes** |  | 2026-10-05 → 2026-10-12 (+7d) |  |
| SDR-2-CON-TE-ZA-4330 | Installation of Telecom Manhole |  | 2026-10-05 → 2026-10-12 (+7d) | 70d → 64d |
| 4 | **Testting** | 2026-10-06 → 2026-10-13 (+7d) | 2026-10-13 → 2026-10-20 (+7d) |  |
| SDR-2-CON-TE-ZA-4340 | Telecom Manhole finishing works | 2026-10-06 → 2026-10-13 (+7d) | 2026-10-13 → 2026-10-20 (+7d) | 70d → 64d |
| 5 | **Backfilling** | 2026-10-14 → 2026-10-21 (+7d) | 2026-11-07 → 2026-11-14 (+7d) |  |
| SDR-2-CON-TE-ZA-4350 | Backfilling over Telecom Manhole | 2026-10-14 → 2026-10-21 (+7d) | 2026-11-07 → 2026-11-14 (+7d) | 70d → 64d |
| 7 | **TELECOMMUNICATION IN ( PH2-G-MCF0 )** |  | 2026-11-05 → 2026-11-12 (+7d) |  |
| 3 | **Ducts** |  | 2026-10-05 → 2026-10-12 (+7d) |  |
| 2 | **Excavation** |  | 2026-10-05 → 2026-10-12 (+7d) |  |
| SDR-2-CON-TE-ZA-4380 | Excavation for telecom crossing ducts & trenches |  | 2026-10-05 → 2026-10-12 (+7d) | 75d → 90d |
| 5 | **Pipe laying** |  | 2026-10-05 → 2026-10-12 (+7d) |  |
| SDR-2-CON-TE-ZA-4390 | HDPE Pipes for Telecom Installation |  | 2026-10-05 → 2026-10-12 (+7d) | 102d → 117d |
| 6 | **Backfilling** |  | 2026-10-05 → 2026-10-12 (+7d) |  |
| SDR-2-CON-TE-ZA-4400 | Backfilling over HDPE Telecom Pipes |  | 2026-10-05 → 2026-10-12 (+7d) | 102d → 117d |
| 7 | **Pulling Cable** |  | 2026-10-05 → 2026-10-12 (+7d) |  |
| SDR-2-CON-TE-ZA-4450 | Pulling Cable |  | 2026-10-05 → 2026-10-12 (+7d) | 102d → 117d |
| 4 | **Manholes** |  | 2026-11-05 → 2026-11-12 (+7d) |  |
| 1 | **Excavation** |  | 2026-10-05 → 2026-10-12 (+7d) |  |
| SDR-2-CON-TE-ZA-4410 | Excavation for Telecom Manholes |  | 2026-10-05 → 2026-10-12 (+7d) | 75d → 90d |
| 2 | **Bedding Work** |  | 2026-10-05 → 2026-10-12 (+7d) |  |
| SDR-2-CON-TE-ZA-4460 | Sand bedding for Telecom Manhole |  | 2026-10-05 → 2026-10-12 (+7d) | 75d → 90d |
| 3 | **Install Manholes** |  | 2026-10-05 → 2026-10-12 (+7d) |  |
| SDR-2-CON-TE-ZA-4420 | Installation of Telecom Manhole |  | 2026-10-05 → 2026-10-12 (+7d) | 75d → 90d |
| 4 | **Testting** | 2026-10-06 → 2026-10-13 (+7d) | 2026-10-13 → 2026-10-20 (+7d) |  |
| SDR-2-CON-TE-ZA-4430 | Telecom Manhole finishing works | 2026-10-06 → 2026-10-13 (+7d) | 2026-10-13 → 2026-10-20 (+7d) | 75d → 90d |
| 5 | **Backfilling** | 2026-10-14 → 2026-10-21 (+7d) | 2026-11-05 → 2026-11-12 (+7d) |  |
| SDR-2-CON-TE-ZA-4440 | Backfilling over Telecom Manhole | 2026-10-14 → 2026-10-21 (+7d) | 2026-11-05 → 2026-11-12 (+7d) | 75d → 90d |
| 4 | **TELECOMMUNICATION IN ( PH2-G-MCG0 )** |  | 2026-11-18 → 2026-11-25 (+7d) |  |
| 3 | **Ducts** |  | 2026-10-05 → 2026-10-12 (+7d) |  |
| 2 | **Excavation** |  | 2026-10-05 → 2026-10-12 (+7d) |  |
| SDR-2-CON-TE-ZA-4470 | Excavation for telecom crossing ducts & trenches |  | 2026-10-05 → 2026-10-12 (+7d) | 77d → 76d |
| 5 | **Pipe laying** |  | 2026-10-05 → 2026-10-12 (+7d) |  |
| SDR-2-CON-TE-ZA-4480 | HDPE Pipes for Telecom Installation |  | 2026-10-05 → 2026-10-12 (+7d) | 77d → 76d |
| 6 | **Backfilling** |  | 2026-10-05 → 2026-10-12 (+7d) |  |
| SDR-2-CON-TE-ZA-4490 | Backfilling over HDPE Telecom Pipes |  | 2026-10-05 → 2026-10-12 (+7d) | 77d → 76d |
| 7 | **Pulling Cable** |  | 2026-10-05 → 2026-10-12 (+7d) |  |
| SDR-2-CON-TE-ZA-4540 | Pulling Cable |  | 2026-10-05 → 2026-10-12 (+7d) | 77d → 76d |
| 4 | **Manholes** |  | 2026-11-18 → 2026-11-25 (+7d) |  |
| 1 | **Excavation** |  | 2026-10-05 → 2026-10-12 (+7d) |  |
| SDR-2-CON-TE-ZA-4500 | Excavation for Telecom Manholes |  | 2026-10-05 → 2026-10-12 (+7d) | 128d → 122d |
| 2 | **Bedding Work** |  | 2026-10-05 → 2026-10-12 (+7d) |  |
| SDR-2-CON-TE-ZA-4550 | Sand bedding for Telecom Manhole |  | 2026-10-05 → 2026-10-12 (+7d) | 128d → 122d |
| 3 | **Install Manholes** |  | 2026-10-05 → 2026-10-12 (+7d) |  |
| SDR-2-CON-TE-ZA-4510 | Installation of Telecom Manhole |  | 2026-10-05 → 2026-10-12 (+7d) | 128d → 122d |
| 4 | **Testting** | 2026-10-06 → 2026-10-13 (+7d) | 2026-10-13 → 2026-10-20 (+7d) |  |
| SDR-2-CON-TE-ZA-4520 | Telecom Manhole finishing works | 2026-10-06 → 2026-10-13 (+7d) | 2026-10-13 → 2026-10-20 (+7d) | 128d → 122d |
| 5 | **Backfilling** | 2026-10-26 → 2026-11-02 (+7d) | 2026-11-18 → 2026-11-25 (+7d) |  |

| ID | Task | Start | Finish | Total float | Predecessors |
| --- | --- | --- | --- | --- | --- |
| SDR-2-CON-TE-ZA-4530 | Backfilling over Telecom Manhole | 2026-10-26 → 2026-11-02 (+7d) | 2026-11-18 → 2026-11-25 (+7d) | 128d → 122d |  |
| ZA | **ZONE A** |  | 2027-06-30 → 2027-07-01 (+1d) |  |  |
| 2 | **IRRIGATION WORKS** |  | 2027-06-30 → 2027-07-01 (+1d) |  |  |
| 1 | **IRRIGATION WORKS IN ( PH2-COL-MC10 )** |  | 2027-06-21 → 2027-07-01 (+10d) |  |  |
| SDR-2-CON-IR-ZA-1000 | Pre Install for irrigation Works |  |  | 0d → 0.74d | SDR-2-CON-SE-ZA-1490, SDR-2-CON-SE-ZA-1550, SDR-2-CON-SE-ZA-1560, SDR-2-CON-SE-ZA-1620, SDR-2-CON-SE-ZA-1590, SDR-2-CON-SE-ZA-1650, SDR-2-CON-SE-ZA-1660, SDR-2-CON-SE-ZA-1720, SDR-2-CON-SE-ZA-1690, SDR-2-CON-SE-ZA-1750, SDR-2-CON-SE-ZA-1760, SDR-2-CON-SE-ZA-1820, SDR-2-CON-SE-ZA-1790, SDR-2-CON-SE-ZA-1850, SDR-2-CON-SE-ZA-1860, SDR-2-CON-SE-ZA-1920, SDR-2-CON-SE-ZA-1890, SDR-2-CON-SE-ZA-1950, SDR-2-CON-SE-ZA-1960, SDR-2-CON-SE-ZA-2020, SDR-2-CON-SE-ZA-1990, SDR-2-CON-SE-ZA-2050, SDR-2-CON-SE-ZA-2060, SDR-2-CON-SE-ZA-2120, SDR-2-CON-SE-ZA-2070, SDR-2-CON-SE-ZA-2080, SDR-2-CON-SE-ZA-2130, SDR-2-CON-SE-ZA-2090, SDR-2-CON-SE-ZA-2150, SDR-2-CON-SE-ZA-2100, SDR-2-CON-SE-ZA-2140, SDR-2-CON-SE-ZA-2160, SDR-2-CON-SE-ZA-2220, SDR-2-CON-SE-ZA-2170, SDR-2-CON-SE-ZA-2230, SDR-2-CON-SE-ZA-2190, SDR-2-CON-SE-ZA-2250, SDR-2-CON-SE-ZA-2200, SDR-2-CON-SE-ZA-2240, SDR-2-CON-SE-ZA-2260, SDR-2-CON-SE-ZA-2320, SDR-2-CON-SE-ZA-2270, SDR-2-CON-SE-ZA-2280, SDR-2-CON-SE-ZA-2330, SDR-2-CON-SE-ZA-2290, SDR-2-CON-SE-ZA-2350, SDR-2-CON-SE-ZA-2300, SDR-2-CON-SE-ZA-2340, SDR-2-CON-SE-ZA-2360, SDR-2-CON-SE-ZA-2420, SDR-2-CON-SE-ZA-2370, SDR-2-CON-SE-ZA-2380, SDR-2-CON-SE-ZA-2430, SDR-2-CON-SE-ZA-2390, SDR-2-CON-SE-ZA-2450, SDR-2-CON-SE-ZA-2400, SDR-2-CON-SE-ZA-2440, SDR-2-CON-PW-ZG-1000, SDR-2-CON-PW-ZA-2910, SDR-2-CON-PW-ZA-3010, SDR-2-CON-PW-ZA-3020, SDR-2-CON-PW-ZA-3110, SDR-2-CON-PW-ZA-3120, SDR-2-CON-PW-ZA-2560, SDR-2-CON-TE-ZA-4290, SDR-2-CON-RW-ZA-1720, SDR-2-CON-RW-ZA-1720 FF, SDR-2-CON-ST-ZA-6120, SDR-2-CON-SE-ZA-1010 FF, SDR-2-CON-SE-ZA-1020 FF, SDR-2-CON-SE-ZA-1040 FF, SDR-2-CON-SE-ZA-1050 FF, SDR-2-CON-SE-ZA-1470 FF, SDR-2-CON-SE-ZA-1480 FF, SDR-2-CON-SE-ZA-1500 FF, SDR-2-CON-SE-ZA-1510 FF, SDR-2-CON-SE-ZA-1570 FF, SDR-2-CON-SE-ZA-1580 FF, SDR-2-CON-SE-ZA-1600 FF, SDR-2-CON-SE-ZA-1610 FF, SDR-2-CON-SE-ZA-1670 FF, SDR-2-CON-SE-ZA-1680 FF, SDR-2-CON-SE-ZA-1700 FF, SDR-2-CON-SE-ZA-1710 FF, SDR-2-CON-SE-ZA-1770 FF, SDR-2-CON-SE-ZA-1780 FF, SDR-2-CON-SE-ZA-1800 FF, SDR-2-CON-SE-ZA-1810 FF, SDR-2-CON-SE-ZA-1870 FF, SDR-2-CON-SE-ZA-1880 FF, SDR-2-CON-SE-ZA-1900 FF, SDR-2-CON-SE-ZA-1910 FF, SDR-2-CON-SE-ZA-1970 FF, SDR-2-CON-SE-ZA-2000 FF, SDR-2-CON-SE-ZA-2110 FF, SDR-2-CON-SE-ZA-2180 FF, SDR-2-CON-SE-ZA-2210 FF, SDR-2-CON-SE-ZA-2310 FF, SDR-2-CON-SE-ZA-2410 FF, SDR-2-CON-TS-ZA-1000 FF, SDR-2-CON-TS-ZA-3100 FF, SDR-2-CON-TS-ZA-3130 FF, SDR-2-CON-TS-ZA-3110 FF, SDR-2-CON-TS-ZA-3120 FF, SDR-2-CON-TS-ZA-3140 FF, SDR-2-CON-TS-ZA-2300 FF, SDR-2-CON-TS-ZA-2380 FF, SDR-2-CON-TS-ZA-2310 FF, SDR-2-CON-TS-ZA-2400 FF, SDR-2-CON-TS-ZA-2900 FF, SDR-2-CON-TS-ZA-3000 FF, SDR-2-CON-TS-ZA-2500 FF, SDR-2-CON-PW-ZA-1000 FF, SDR-2-CON-PW-ZA-2200 FF, SDR-2-CON-PW-ZA-1010 FF, SDR-2-CON-PW-ZA-2260 FF, SDR-2-CON-PW-ZA-2340 FF, SDR-2-CON-PW-ZA-2270 FF, SDR-2-CON-PW-ZA-2330 FF, SDR-2-CON-PW-ZA-2350 FF, SDR-2-CON-PW-ZG-1500 FF, SDR-2-CON-PW-ZG-1010 FF, SDR-2-CON-PW-ZA-2940 FF, SDR-2-CON-PW-ZA-2920 FF, SDR-2-CON-PW-ZA-3040 FF, SDR-2-CON-PW-ZA-3140 FF, SDR-2-CON-PW-ZA-2640 FF, SDR-2-CON-PW-ZA-2570 FF, SDR-2-CON-SL-ZA-1000 FF, SDR-2-CON-SL-ZA-1010 FF, SDR-2-CON-SL-ZA-2870 FF, SDR-2-CON-SL-ZA-2880 FF, SDR-2-CON-SL-ZA-1300 FF, SDR-2-CON-SL-ZA-1310 FF, SDR-2-CON-SL-ZA-2950 FF, SDR-2-CON-SL-ZA-2960 FF, SDR-2-CON-SL-ZA-2990 FF, SDR-2-CON-SL-ZA-3000 FF, SDR-2-CON-SL-ZA-3030 FF, SDR-2-CON-SL-ZA-3040 FF, SDR-2-CON-SL-ZA-3070 FF, SDR-2-CON-SL-ZA-3080 FF, SDR-2-CON-SL-ZA-3110 FF, SDR-2-CON-SL-ZA-3120 FF, SDR-2-CON-SL-ZA-3150 FF, SDR-2-CON-SL-ZA-3160 FF, SDR-2-CON-SL-ZA-3190 FF, SDR-2-CON-SL-ZA-3200 FF, SDR-2-CON-SL-ZA-2910 FF, SDR-2-CON-SL-ZA-2920 FF, SDR-2-CON-MV-ZA-1000 FF, SDR-2-CON-MV-ZA-1070 FF, SDR-2-CON-MV-ZA-1150 FF, SDR-2-CON-MV-ZA-1160 FF, SDR-2-CON-MV-ZA-1170 FF, SDR-2-CON-MV-ZA-1200 FF, SDR-2-CON-MV-ZA-1210 FF, SDR-2-CON-MV-ZA-1240 FF, SDR-2-CON-MV-ZA-1250 FF, SDR-2-CON-TE-ZA-1030 FF, SDR-2-CON-TE-ZA-1850 FF, SDR-2-CON-TE-ZA-3210 FF, SDR-2-CON-TE-ZA-3220 FF, SDR-2-CON-TE-ZA-3230 FF, SDR-2-CON-TE-ZA-3240 FF, SDR-2-CON-TE-ZA-3290 FF, SDR-2-CON-TE-ZA-3250 FF, SDR-2-CON-TE-ZA-3300 FF, SDR-2-CON-TE-ZA-3330 FF, SDR-2-CON-TE-ZA-3390 FF, SDR-2-CON-TE-ZA-3420 FF, SDR-2-CON-TE-ZA-3480 FF, SDR-2-CON-TE-ZA-3490 FF, SDR-2-CON-TE-ZA-3510 FF, SDR-2-CON-TE-ZA-3560 FF, SDR-2-CON-TE-ZA-3570 FF, SDR-2-CON-TE-ZA-3580 FF, SDR-2-CON-TE-ZA-3600 FF, SDR-2-CON-TE-ZA-3650 FF, SDR-2-CON-TE-ZA-3660 FF, SDR-2-CON-TE-ZA-3670 FF, SDR-2-CON-TE-ZA-3750 FF, SDR-2-CON-TE-ZA-3760 FF, SDR-2-CON-TE-ZA-3840 FF, SDR-2-CON-TE-ZA-3850 FF, SDR-2-CON-TE-ZA-3930 FF, SDR-2-CON-TE-ZA-4020 FF, SDR-2-CON-TE-ZA-4110 FF, SDR-2-CON-TE-ZA-4120 FF, SDR-2-CON-TE-ZA-4140 FF, SDR-2-CON-TE-ZA-4190 FF, SDR-2-CON-TE-ZA-4150 FF, SDR-2-CON-SL-ZA-3230 FF, SDR-2-CON-SL-ZA-3240 FF, SDR-2-CON-SL-ZA-3270 FF, SDR-2-CON-SL-ZA-3280 FF, SDR-2-CON-SL-ZA-3310 FF, SDR-2-CON-SL-ZA-3320 FF, SDR-2-CON-SL-ZA-3350 FF, SDR-2-CON-SL-ZA-3360 FF, SDR-2-CON-SL-ZA-3390 FF, SDR-2-CON-SL-ZA-3400 FF, SDR-2-CON-SL-ZA-3420 FF, SDR-2-CON-SL-ZA-3410 FF, SDR-2-CON-MV-ZA-1280 FF, SDR-2-CON-MV-ZA-1290 FF, SDR-2-CON-MV-ZA-1310 FF, SDR-2-CON-MV-ZA-1320 FF, SDR-2-CON-MV-ZA-1330 FF, SDR-2-CON-MV-ZA-1350 FF, SDR-2-CON-TE-ZA-4200 FF, SDR-2-CON-TE-ZA-4210 FF, SDR-2-CON-TE-ZA-4230 FF, SDR-2-CON-TE-ZA-4280 FF, SDR-2-CON-TE-ZA-4240 FF, SDR-2-CON-TE-ZA-4250 FF, SDR-2-CON-TE-ZA-4300 FF, SDR-2-CON-TE-ZA-4310 FF, SDR-2-CON-TE-ZA-4360 FF, SDR-2-CON-TE-ZA-4320 FF, SDR-2-CON-TE-ZA-4370 FF, SDR-2-CON-TE-ZA-4330 FF, SDR-2-CON-TE-ZA-4380 FF, SDR-2-CON-TE-ZA-4390 FF, SDR-2-CON-TE-ZA-4400 FF, SDR-2-CON-TE-ZA-4450 FF, SDR-2-CON-TE-ZA-4410 FF, SDR-2-CON-TE-ZA-4460 FF, SDR-2-CON-TE-ZA-4420 FF, SDR-2-CON-TE-ZA-4470 FF, SDR-2-CON-TE-ZA-4480 FF, SDR-2-CON-TE-ZA-4490 FF, SDR-2-CON-TE-ZA-4540 FF, SDR-2-CON-TE-ZA-4500 FF, SDR-2-CON-TE-ZA-4550 FF, SDR-2-CON-TE-ZA-4510 FF, SDR-2-CON-CC-ZA-1000 FF, SDR-2-CON-CC-ZA-1030 FF, SDR-2-CON-CC-ZA-1080 FF, SDR-2-CON-CC-ZA-1090 FF, SDR-2-CON-CC-ZA-1240 FF, SDR-2-CON-CC-ZA-1250 FF, SDR-2-CON-CC-ZA-1380 FF, SDR-2-CON-CC-ZA-1390 FF, SDR-2-CON-CC-ZA-1670 FF, SDR-2-CON-CC-ZA-1700 FF, SDR-2-CON-CC-ZA-1750 FF, SDR-2-CON-CC-ZA-1790 FF, SDR-2-CON-CC-ZA-1830 FF, SDR-2-CON-ST-ZA-4020 FF, SDR-2-CON-SE-ZA-1430 FF, SDR-2-CON-SE-ZA-1440 FF, SDR-2-CON-SE-ZA-1530 FF, SDR-2-CON-SE-ZA-1540 FF, SDR-2-CON-SE-ZA-1630 FF, SDR-2-CON-SE-ZA-1730 FF, SDR-2-CON-SE-ZA-1740 FF, SDR-2-CON-SE-ZA-1830 FF, SDR-2-CON-SE-ZA-1840 FF, SDR-2-CON-SE-ZA-1930 FF, SDR-2-CON-SE-ZA-1940 FF, SDR-2-CON-SE-ZA-1980 FF, SDR-2-CON-SE-ZA-2030 FF, SDR-2-CON-SE-ZA-2010 FF, SDR-2-CON-SE-ZA-2040 FF, SDR-2-CON-TS-ZA-1900 FF, SDR-2-CON-TS-ZA-1010 FF, SDR-2-CON-TS-ZA-1080 FF, SDR-2-CON-TS-ZA-1910 FF, SDR-2-CON-TS-ZA-1040 FF, SDR-2-CON-TS-ZA-1020 FF, SDR-2-CON-TS-ZA-1050 FF, SDR-2-CON-TS-ZA-1060 FF, SDR-2-CON-TS-ZA-1070 FF, SDR-2-CON-TS-ZA-2200 FF, SDR-2-CON-TS-ZA-2280 FF, SDR-2-CON-TS-ZA-2210 FF, SDR-2-CON-TS-ZA-2270 FF, SDR-2-CON-TS-ZA-2290 FF, SDR-2-CON-TS-ZA-2230 FF, SDR-2-CON-TS-ZA-2240 FF, SDR-2-CON-TS-ZA-2250 FF, SDR-2-CON-TS-ZA-2260 FF, SDR-2-CON-TS-ZA-1180 FF, SDR-2-CON-TS-ZA-1920 FF, SDR-2-CON-TS-ZA-1190 FF, SDR-2-CON-TS-ZA-1260 FF, SDR-2-CON-TS-ZA-1930 FF, SDR-2-CON-TS-ZA-2010 FF, SDR-2-CON-TS-ZA-2000 FF, SDR-2-CON-TS-ZA-2020 FF, SDR-2-CON-TS-ZA-2030 FF, SDR-2-CON-TS-ZA-2040 FF, SDR-2-CON-TS-ZA-1270 FF, SDR-2-CON-TS-ZA-1940 FF, SDR-2-CON-TS-ZA-1280 FF, SDR-2-CON-TS-ZA-1350 FF, SDR-2-CON-TS-ZA-1950 FF, SDR-2-CON-TS-ZA-2060 FF, SDR-2-CON-TS-ZA-2050 FF, SDR-2-CON-TS-ZA-2070 FF, SDR-2-CON-TS-ZA-2080 FF, SDR-2-CON-TS-ZA-2090 FF, SDR-2-CON-TS-ZA-2660 FF, SDR-2-CON-TS-ZA-2650 FF, SDR-2-CON-TS-ZA-2670 FF, SDR-2-CON-TS-ZA-2680 FF, SDR-2-CON-TS-ZA-2690 FF, SDR-2-CON-TS-ZA-2700 FF, SDR-2-CON-TS-ZA-2730 FF, SDR-2-CON-TS-ZA-2710 FF, SDR-2-CON-TS-ZA-2720 FF, SDR-2-CON-TS-ZA-2740 FF, SDR-2-CON-TS-ZA-2760 FF, SDR-2-CON-TS-ZA-2750 FF, SDR-2-CON-TS-ZA-2770 FF, SDR-2-CON-TS-ZA-2780 FF, SDR-2-CON-TS-ZA-2800 FF, SDR-2-CON-TS-ZA-2830 FF, SDR-2-CON-TS-ZA-2810 FF, SDR-2-CON-TS-ZA-2820 FF, SDR-2-CON-TS-ZA-2840 FF, SDR-2-CON-TS-ZA-2860 FF, SDR-2-CON-TS-ZA-2850 FF, SDR-2-CON-TS-ZA-2870 FF, SDR-2-CON-TS-ZA-2880 FF, SDR-2-CON-TS-ZA-2890 FF, SDR-2-CON-TS-ZA-1630 FF, SDR-2-CON-TS-ZA-1960 FF, SDR-2-CON-TS-ZA-1640 FF, SDR-2-CON-TS-ZA-1710 FF, SDR-2-CON-TS-ZA-1970 FF, SDR-2-CON-TS-ZA-2110 FF, SDR-2-CON-TS-ZA-2100 FF, SDR-2-CON-TS-ZA-2120 FF, SDR-2-CON-TS-ZA-2130 FF, SDR-2-CON-TS-ZA-2140 FF, SDR-2-CON-TS-ZA-1720 FF, SDR-2-CON-TS-ZA-1980 FF, SDR-2-CON-TS-ZA-1730 FF, SDR-2-CON-TS-ZA-1800 FF, SDR-2-CON-TS-ZA-1990 FF, SDR-2-CON-TS-ZA-2160 FF, SDR-2-CON-TS-ZA-2150 FF, SDR-2-CON-TS-ZA-2170 FF, SDR-2-CON-TS-ZA-2180 FF, SDR-2-CON-TS-ZA-2190 FF, SDR-2-CON-TS-ZA-3160 FF, SDR-2-CON-TS-ZA-3150 FF, SDR-2-CON-TS-ZA-3170 FF, SDR-2-CON-TS-ZA-3180 FF, SDR-2-CON-TS-ZA-3190 FF, SDR-2-CON-TS-ZA-2370 FF, SDR-2-CON-TS-ZA-2390 FF, SDR-2-CON-TS-ZA-2330 FF, SDR-2-CON-TS-ZA-2320 FF, SDR-2-CON-TS-ZA-2340 FF, SDR-2-CON-TS-ZA-2350 FF, SDR-2-CON-TS-ZA-2360 FF, SDR-2-CON-TS-ZA-2430 FF, SDR-2-CON-TS-ZA-2410 FF, SDR-2-CON-TS-ZA-2420 FF, SDR-2-CON-TS-ZA-2440 FF, SDR-2-CON-TS-ZA-2460 FF, SDR-2-CON-TS-ZA-2450 FF, SDR-2-CON-TS-ZA-2470 FF, SDR-2-CON-TS-ZA-2480 FF, SDR-2-CON-TS-ZA-2490 FF, SDR-2-CON-TS-ZA-2930 FF, SDR-2-CON-TS-ZA-2910 FF, SDR-2-CON-TS-ZA-2920 FF, SDR-2-CON-TS-ZA-2940 FF, SDR-2-CON-TS-ZA-2960 FF, SDR-2-CON-TS-ZA-2950 FF, SDR-2-CON-TS-ZA-2970 FF, SDR-2-CON-TS-ZA-2980 FF, SDR-2-CON-TS-ZA-2990 FF, SDR-2-CON-TS-ZA-3030 FF, SDR-2-CON-TS-ZA-3010 FF, SDR-2-CON-TS-ZA-3020 FF, SDR-2-CON-TS-ZA-3040 FF, SDR-2-CON-TS-ZA-3060 FF, SDR-2-CON-TS-ZA-3050 FF, SDR-2-CON-TS-ZA-2530 FF, SDR-2-CON-TS-ZA-2510 FF, SDR-2-CON-TS-ZA-2520 FF, SDR-2-CON-TS-ZA-2560 FF, SDR-2-CON-TS-ZA-2550 FF, SDR-2-CON-TS-ZA-2570 FF, SDR-2-CON-TS-ZA-2580 FF, SDR-2-CON-TS-ZA-2590 FF, SDR-2-CON-PW-ZA-1080 FF, SDR-2-CON-PW-ZA-2210 FF, SDR-2-CON-PW-ZA-1040 FF, SDR-2-CON-PW-ZA-1020 FF, SDR-2-CON-PW-ZA-1050 FF, SDR-2-CON-PW-ZA-1030 FF, SDR-2-CON-PW-ZA-1070 FF, SDR-2-CON-PW-ZA-2300 FF, SDR-2-CON-PW-ZA-2280 FF, SDR-2-CON-PW-ZA-2310 FF, SDR-2-CON-PW-ZA-2290 FF, SDR-2-CON-PW-ZA-1200 FF, SDR-2-CON-PW-ZA-2220 FF, SDR-2-CON-PW-ZA-1210 FF, SDR-2-CON-PW-ZA-1280 FF, SDR-2-CON-PW-ZA-2230 FF, SDR-2-CON-PW-ZA-2680 FF, SDR-2-CON-PW-ZA-2660 FF, SDR-2-CON-PW-ZA-2690 FF, SDR-2-CON-PW-ZA-2670 FF, SDR-2-CON-PW-ZA-2700 FF, SDR-2-CON-PW-ZA-2710 FF, SDR-2-CON-PW-ZA-2740 FF, SDR-2-CON-PW-ZA-2720 FF, SDR-2-CON-PW-ZA-2730 FF, SDR-2-CON-PW-ZA-2750 FF, SDR-2-CON-PW-ZA-2780 FF, SDR-2-CON-PW-ZA-2760 FF, SDR-2-CON-PW-ZA-2790 FF, SDR-2-CON-PW-ZA-2770 FF, SDR-2-CON-PW-ZA-2800 FF, SDR-2-CON-PW-ZA-1400 FF, SDR-2-CON-PW-ZA-2240 FF, SDR-2-CON-PW-ZA-1410 FF, SDR-2-CON-PW-ZA-1480 FF, SDR-2-CON-PW-ZA-2250 FF, SDR-2-CON-PW-ZA-3230 FF, SDR-2-CON-PW-ZA-3210 FF, SDR-2-CON-PW-ZA-3240 FF, SDR-2-CON-PW-ZA-3220 FF, SDR-2-CON-PW-ZA-3260 FF, SDR-2-CON-PW-ZA-3290 FF, SDR-2-CON-PW-ZA-3270 FF, SDR-2-CON-PW-ZA-3280 FF, SDR-2-CON-PW-ZA-3300 FF, SDR-2-CON-PW-ZA-3330 FF, SDR-2-CON-PW-ZA-3310 FF, SDR-2-CON-PW-ZA-3340 FF, SDR-2-CON-PW-ZA-3320 FF, SDR-2-CON-PW-ZA-3360 FF, SDR-2-CON-PW-ZA-3390 FF, SDR-2-CON-PW-ZA-3370 FF, SDR-2-CON-PW-ZA-3380 FF, SDR-2-CON-PW-ZA-3400 FF, SDR-2-CON-PW-ZA-3460 FF, SDR-2-CON-PW-ZA-3490 FF, SDR-2-CON-PW-ZA-3470 FF, SDR-2-CON-PW-ZA-3480 FF, SDR-2-CON-PW-ZA-3500 FF, SDR-2-CON-PW-ZA-3530 FF, SDR-2-CON-PW-ZA-3510 FF, SDR-2-CON-PW-ZA-3540 FF, SDR-2-CON-PW-ZA-3520 FF, SDR-2-CON-PW-ZA-3550 FF, SDR-2-CON-PW-ZA-3560 FF, SDR-2-CON-PW-ZA-3590 FF, SDR-2-CON-PW-ZA-3570 FF, SDR-2-CON-PW-ZA-3580 FF, SDR-2-CON-PW-ZA-3600 FF, SDR-2-CON-PW-ZA-2810 FF, SDR-2-CON-PW-ZA-2840 FF, SDR-2-CON-PW-ZA-2820 FF, SDR-2-CON-PW-ZA-2830 FF, SDR-2-CON-PW-ZA-2850 FF, SDR-2-CON-PW-ZA-2880 FF, SDR-2-CON-PW-ZA-2860 FF, SDR-2-CON-PW-ZA-2890 FF, SDR-2-CON-PW-ZA-2870 FF, SDR-2-CON-PW-ZA-2900 FF, SDR-2-CON-PW-ZA-2360 FF, SDR-2-CON-PW-ZA-2440 FF, SDR-2-CON-PW-ZA-2370 FF, SDR-2-CON-PW-ZA-2430 FF, SDR-2-CON-PW-ZA-2450 FF, SDR-2-CON-PW-ZA-2400 FF, SDR-2-CON-PW-ZA-2380 FF, SDR-2-CON-PW-ZA-2410 FF, SDR-2-CON-PW-ZA-2390 FF, SDR-2-CON-PW-ZA-2420 FF, SDR-2-CON-PW-ZA-2460 FF, SDR-2-CON-PW-ZA-2540 FF, SDR-2-CON-PW-ZA-2470 FF, SDR-2-CON-PW-ZA-2530 FF, SDR-2-CON-PW-ZA-2500 FF, SDR-2-CON-PW-ZA-2480 FF, SDR-2-CON-PW-ZA-2510 FF, SDR-2-CON-PW-ZA-2490 FF, SDR-2-CON-PW-ZA-2520 FF, SDR-2-CON-PW-ZG-1080 FF, SDR-2-CON-PW-ZG-1510 FF, SDR-2-CON-PW-ZA-3680 FF, SDR-2-CON-PW-ZA-3660 FF, SDR-2-CON-PW-ZA-3690 FF, SDR-2-CON-PW-ZA-3670 FF, SDR-2-CON-PW-ZA-3700 FF, SDR-2-CON-PW-ZA-2930 FF, SDR-2-CON-PW-ZA-2950 FF, SDR-2-CON-PW-ZA-2980 FF, SDR-2-CON-PW-ZA-2960 FF, SDR-2-CON-PW-ZA-2990 FF, SDR-2-CON-PW-ZA-2970 FF, SDR-2-CON-PW-ZA-3030 FF, SDR-2-CON-PW-ZA-3050 FF, SDR-2-CON-PW-ZA-3080 FF, SDR-2-CON-PW-ZA-3060 FF, SDR-2-CON-PW-ZA-3090 FF, SDR-2-CON-PW-ZA-3070 FF, SDR-2-CON-PW-ZA-3100 FF, SDR-2-CON-PW-ZA-3130 FF, SDR-2-CON-PW-ZA-3150 FF, SDR-2-CON-PW-ZA-3180 FF, SDR-2-CON-PW-ZA-3160 FF, SDR-2-CON-PW-ZA-3190 FF, SDR-2-CON-PW-ZA-3170 FF, SDR-2-CON-PW-ZA-3200 FF, SDR-2-CON-PW-ZA-2630 FF, SDR-2-CON-PW-ZA-2650 FF, SDR-2-CON-PW-ZA-2600 FF, SDR-2-CON-PW-ZA-2580 FF, SDR-2-CON-PW-ZA-2610 FF, SDR-2-CON-PW-ZA-2590 FF, SDR-2-CON-PW-ZA-2620 FF, SDR-2-CON-SL-ZA-1110 FF, SDR-2-CON-SL-ZA-1100 FF, SDR-2-CON-SL-ZA-2900 FF, SDR-2-CON-SL-ZA-2890 FF, SDR-2-CON-SL-ZA-1410 FF, SDR-2-CON-SL-ZA-1400 FF, SDR-2-CON-SL-ZA-2980 FF, SDR-2-CON-SL-ZA-2970 FF, SDR-2-CON-SL-ZA-3020 FF, SDR-2-CON-SL-ZA-3010 FF, SDR-2-CON-SL-ZA-3060 FF, SDR-2-CON-SL-ZA-3050 FF, SDR-2-CON-SL-ZA-3100 FF, SDR-2-CON-SL-ZA-3090 FF, SDR-2-CON-SL-ZA-3140 FF, SDR-2-CON-SL-ZA-3130 FF, SDR-2-CON-SL-ZA-3180 FF, SDR-2-CON-SL-ZA-3170 FF, SDR-2-CON-SL-ZA-3220 FF, SDR-2-CON-SL-ZA-3210 FF, SDR-2-CON-SL-ZA-2940 FF, SDR-2-CON-SL-ZA-2930 FF, SDR-2-CON-SL-ZA-2650 FF, SDR-2-CON-SL-ZA-2760 FF, SDR-2-CON-SL-ZA-2770 FF, SDR-2-CON-SL-ZA-2780 FF, SDR-2-CON-SL-ZA-2660 FF, SDR-2-CON-SL-ZA-2790 FF, SDR-2-CON-SL-ZA-2800 FF, SDR-2-CON-SL-ZA-2670 FF, SDR-2-CON-SL-ZA-2810 FF, SDR-2-CON-SL-ZA-2820 FF, SDR-2-CON-SL-ZA-2680 FF, SDR-2-CON-SL-ZA-2830 FF, SDR-2-CON-SL-ZA-2840 FF, SDR-2-CON-SL-ZA-2690 FF, SDR-2-CON-SL-ZA-2850 FF, SDR-2-CON-SL-ZA-2860 FF, SDR-2-CON-MV-ZA-1100 FF, SDR-2-CON-MV-ZA-1190 FF, SDR-2-CON-MV-ZA-1180 FF, SDR-2-CON-MV-ZA-1230 FF, SDR-2-CON-MV-ZA-1220 FF, SDR-2-CON-MV-ZA-1270 FF, SDR-2-CON-MV-ZA-1260 FF, SDR-2-CON-TE-ZA-1040 FF, SDR-2-CON-TE-ZA-1050 FF, SDR-2-CON-TE-ZA-1060 FF, SDR-2-CON-TE-ZA-3280 FF, SDR-2-CON-TE-ZA-3260 FF, SDR-2-CON-TE-ZA-3270 FF, SDR-2-CON-TE-ZA-3310 FF, SDR-2-CON-TE-ZA-3320 FF, SDR-2-CON-TE-ZA-3370 FF, SDR-2-CON-TE-ZA-3380 FF, SDR-2-CON-TE-ZA-3340 FF, SDR-2-CON-TE-ZA-3350 FF, SDR-2-CON-TE-ZA-3360 FF, SDR-2-CON-TE-ZA-3400 FF, SDR-2-CON-TE-ZA-3410 FF, SDR-2-CON-TE-ZA-3460 FF, SDR-2-CON-TE-ZA-3470 FF, SDR-2-CON-TE-ZA-3430 FF, SDR-2-CON-TE-ZA-3440 FF, SDR-2-CON-TE-ZA-3450 FF, SDR-2-CON-TE-ZA-3500 FF, SDR-2-CON-TE-ZA-3550 FF, SDR-2-CON-TE-ZA-3520 FF, SDR-2-CON-TE-ZA-3530 FF, SDR-2-CON-TE-ZA-3540 FF, SDR-2-CON-TE-ZA-3590 FF, SDR-2-CON-TE-ZA-3640 FF, SDR-2-CON-TE-ZA-3610 FF, SDR-2-CON-TE-ZA-3620 FF, SDR-2-CON-TE-ZA-3630 FF, SDR-2-CON-TE-ZA-3680 FF, SDR-2-CON-TE-ZA-3730 FF, SDR-2-CON-TE-ZA-3690 FF, SDR-2-CON-TE-ZA-3740 FF, SDR-2-CON-TE-ZA-3700 FF, SDR-2-CON-TE-ZA-3710 FF, SDR-2-CON-TE-ZA-3720 FF, SDR-2-CON-TE-ZA-3770 FF, SDR-2-CON-TE-ZA-3820 FF, SDR-2-CON-TE-ZA-3780 FF, SDR-2-CON-TE-ZA-3830 FF, SDR-2-CON-TE-ZA-3790 FF, SDR-2-CON-TE-ZA-3800 FF, SDR-2-CON-TE-ZA-3810 FF, SDR-2-CON-TE-ZA-3860 FF, SDR-2-CON-TE-ZA-3910 FF, SDR-2-CON-TE-ZA-3870 FF, SDR-2-CON-TE-ZA-3920 FF, SDR-2-CON-TE-ZA-3880 FF, SDR-2-CON-TE-ZA-3890 FF, SDR-2-CON-TE-ZA-3900 FF, SDR-2-CON-TE-ZA-3940 FF, SDR-2-CON-TE-ZA-3950 FF, SDR-2-CON-TE-ZA-4000 FF, SDR-2-CON-TE-ZA-3960 FF, SDR-2-CON-TE-ZA-4010 FF, SDR-2-CON-TE-ZA-3970 FF, SDR-2-CON-TE-ZA-3980 FF, SDR-2-CON-TE-ZA-3990 FF, SDR-2-CON-TE-ZA-4030 FF, SDR-2-CON-TE-ZA-4040 FF, SDR-2-CON-TE-ZA-4090 FF, SDR-2-CON-TE-ZA-4050 FF, SDR-2-CON-TE-ZA-4100 FF, SDR-2-CON-TE-ZA-4060 FF, SDR-2-CON-TE-ZA-4070 FF, SDR-2-CON-TE-ZA-4080 FF, SDR-2-CON-TE-ZA-4130 FF, SDR-2-CON-TE-ZA-4180 FF, SDR-2-CON-TE-ZA-4160 FF, SDR-2-CON-TE-ZA-4170 FF, SDR-2-CON-SL-ZA-3260 FF, SDR-2-CON-SL-ZA-3250 FF, SDR-2-CON-SL-ZA-3300 FF, SDR-2-CON-SL-ZA-3290 FF, SDR-2-CON-SL-ZA-3340 FF, SDR-2-CON-SL-ZA-3330 FF, SDR-2-CON-SL-ZA-3380 FF, SDR-2-CON-SL-ZA-3370 FF, SDR-2-CON-SL-ZA-3430 FF, SDR-2-CON-SL-ZA-3440 FF, SDR-2-CON-SL-ZA-3450 FF, SDR-2-CON-SL-ZA-3460 FF, SDR-2-CON-SL-ZA-3470 FF, SDR-2-CON-SL-ZA-3480 FF, SDR-2-CON-SL-ZA-3490 FF, SDR-2-CON-SL-ZA-3500 FF, SDR-2-CON-SL-ZA-3510 FF, SDR-2-CON-SL-ZA-3520 FF, SDR-2-CON-SL-ZA-3530 FF, SDR-2-CON-SL-ZA-3540 FF, SDR-2-CON-SL-ZA-3550 FF, SDR-2-CON-SL-ZA-3560 FF, SDR-2-CON-SL-ZA-3570 FF, SDR-2-CON-SL-ZA-3580 FF, SDR-2-CON-MV-ZA-1300 FF, SDR-2-CON-MV-ZA-1340 FF, SDR-2-CON-TE-ZA-4220 FF, SDR-2-CON-TE-ZA-4270 FF, SDR-2-CON-TE-ZA-4260 FF, SDR-2-CON-TE-ZA-4340 FF, SDR-2-CON-TE-ZA-4350 FF, SDR-2-CON-TE-ZA-4430 FF, SDR-2-CON-TE-ZA-4440 FF, SDR-2-CON-TE-ZA-4520 FF, SDR-2-CON-TE-ZA-4530 FF, SDR-2-CON-CC-ZA-1050 FF, SDR-2-CON-CC-ZA-1060 FF, SDR-2-CON-CC-ZA-1100 FF, SDR-2-CON-CC-ZA-1110 FF, SDR-2-CON-CC-ZA-1260 FF, SDR-2-CON-CC-ZA-1270 FF, SDR-2-CON-CC-ZA-1400 FF, SDR-2-CON-CC-ZA-1410 FF, SDR-2-CON-CC-ZA-1500 FF, SDR-2-CON-CC-ZA-1510 FF, SDR-2-CON-CC-ZA-1520 FF, SDR-2-CON-CC-ZA-1530 FF, SDR-2-CON-CC-ZA-1540 FF, SDR-2-CON-CC-ZA-1550 FF, SDR-2-CON-CC-ZA-1560 FF, SDR-2-CON-CC-ZA-1570 FF, SDR-2-CON-CC-ZA-1580 FF, SDR-2-CON-CC-ZA-1590 FF, SDR-2-CON-CC-ZA-1610 FF, SDR-2-CON-CC-ZA-1620 FF, SDR-2-CON-CC-ZA-1630 FF, SDR-2-CON-CC-ZA-1640 FF, SDR-2-CON-CC-ZA-1650 FF, SDR-2-CON-CC-ZA-1660 FF, SDR-2-CON-CC-ZA-1720 FF, SDR-2-CON-CC-ZA-1730 FF, SDR-2-CON-CC-ZA-1760 FF, SDR-2-CON-CC-ZA-1770 FF, SDR-2-CON-CC-ZA-1780 FF, SDR-2-CON-CC-ZA-1800 FF, SDR-2-CON-CC-ZA-1810 FF, SDR-2-CON-CC-ZA-1820 FF, SDR-2-CON-CC-ZA-1840 FF, SDR-2-CON-CC-ZA-1850 FF, SDR-2-CON-CC-ZA-1860 FF, SDR-2-CON-CC-ZG-1500 FF, SDR-2-CON-CC-ZG-1540 FF, SDR-2-CON-CC-ZG-1550 FF, SDR-2-CON-CC-ZG-1510 FF, SDR-2-CON-CC-ZG-1560 FF, SDR-2-CON-CC-ZG-1570 FF, SDR-2-CON-CC-ZG-1580 FF, SDR-2-CON-CC-ZG-1520 FF, SDR-2-CON-CC-ZG-1590 FF, SDR-2-CON-CC-ZG-1530 FF, SDR-2-CON-CC-ZG-1600 FF, SDR-2-CON-CC-ZG-1610 FF, SDR-2-CON-CC-ZG-1620 FF, SDR-2-CON-CC-ZG-1630 FF, SDR-2-CON-CC-ZG-1640 FF, SDR-2-CON-CC-ZG-1650 FF, SDR-2-CON-CC-ZG-1660 FF, SDR-2-CON-SE-ZA-2690 FF, SDR-2-MILS-1050 FF, SDR-2-CON-ST-ZA-5970 FF, SDR-2-CON-ST-ZA-5220 FF, SDR-2-CON-SE-ZA-1000, SDR-2-CON-SE-ZA-1420, SDR-2-CON-SE-ZA-1030, SDR-2-CON-SE-ZA-1450, SDR-2-CON-SE-ZA-1460, SDR-2-CON-SE-ZA-1520 → SDR-2-CON-SE-ZA-1490, SDR-2-CON-SE-ZA-1550, SDR-2-CON-SE-ZA-1560, SDR-2-CON-SE-ZA-1620, SDR-2-CON-SE-ZA-1590, SDR-2-CON-SE-ZA-1650, SDR-2-CON-SE-ZA-1660, SDR-2-CON-SE-ZA-1720, SDR-2-CON-SE-ZA-1690, SDR-2-CON-SE-ZA-1750, SDR-2-CON-SE-ZA-1760, SDR-2-CON-SE-ZA-1820, SDR-2-CON-SE-ZA-1790, SDR-2-CON-SE-ZA-1850, SDR-2-CON-SE-ZA-1860, SDR-2-CON-SE-ZA-1920, SDR-2-CON-SE-ZA-1890, SDR-2-CON-SE-ZA-1950, SDR-2-CON-SE-ZA-1960, SDR-2-CON-SE-ZA-2020, SDR-2-CON-SE-ZA-1990, SDR-2-CON-SE-ZA-2050, SDR-2-CON-SE-ZA-2060, SDR-2-CON-SE-ZA-2120, SDR-2-CON-SE-ZA-2070, SDR-2-CON-SE-ZA-2080, SDR-2-CON-SE-ZA-2130, SDR-2-CON-SE-ZA-2090, SDR-2-CON-SE-ZA-2150, SDR-2-CON-SE-ZA-2100, SDR-2-CON-SE-ZA-2140, SDR-2-CON-SE-ZA-2160, SDR-2-CON-SE-ZA-2220, SDR-2-CON-SE-ZA-2170, SDR-2-CON-SE-ZA-2230, SDR-2-CON-SE-ZA-2190, SDR-2-CON-SE-ZA-2250, SDR-2-CON-SE-ZA-2200, SDR-2-CON-SE-ZA-2240, SDR-2-CON-SE-ZA-2260, SDR-2-CON-SE-ZA-2320, SDR-2-CON-SE-ZA-2270, SDR-2-CON-SE-ZA-2280, SDR-2-CON-SE-ZA-2330, SDR-2-CON-SE-ZA-2290, SDR-2-CON-SE-ZA-2350, SDR-2-CON-SE-ZA-2300, SDR-2-CON-SE-ZA-2340, SDR-2-CON-SE-ZA-2360, SDR-2-CON-SE-ZA-2420, SDR-2-CON-SE-ZA-2370, SDR-2-CON-SE-ZA-2380, SDR-2-CON-SE-ZA-2430, SDR-2-CON-SE-ZA-2390, SDR-2-CON-SE-ZA-2450, SDR-2-CON-SE-ZA-2400, SDR-2-CON-SE-ZA-2440, SDR-2-CON-PW-ZG-1000, SDR-2-CON-PW-ZA-2910, SDR-2-CON-PW-ZA-3010, SDR-2-CON-PW-ZA-3020, SDR-2-CON-PW-ZA-3110, SDR-2-CON-PW-ZA-3120, SDR-2-CON-PW-ZA-2560, SDR-2-CON-TE-ZA-4290, SDR-2-CON-RW-ZA-1720, SDR-2-CON-RW-ZA-1720 FF, SDR-2-CON-ST-ZA-6120, SDR-2-CON-SE-ZA-1010 FF, SDR-2-CON-SE-ZA-1020 FF, SDR-2-CON-SE-ZA-1040 FF, SDR-2-CON-SE-ZA-1050 FF, SDR-2-CON-SE-ZA-1470 FF, SDR-2-CON-SE-ZA-1480 FF, SDR-2-CON-SE-ZA-1500 FF, SDR-2-CON-SE-ZA-1510 FF, SDR-2-CON-SE-ZA-1570 FF, SDR-2-CON-SE-ZA-1580 FF, SDR-2-CON-SE-ZA-1600 FF, SDR-2-CON-SE-ZA-1610 FF, SDR-2-CON-SE-ZA-1670 FF, SDR-2-CON-SE-ZA-1680 FF, SDR-2-CON-SE-ZA-1700 FF, SDR-2-CON-SE-ZA-1710 FF, SDR-2-CON-SE-ZA-1770 FF, SDR-2-CON-SE-ZA-1780 FF, SDR-2-CON-SE-ZA-1800 FF, SDR-2-CON-SE-ZA-1810 FF, SDR-2-CON-SE-ZA-1870 FF, SDR-2-CON-SE-ZA-1880 FF, SDR-2-CON-SE-ZA-1900 FF, SDR-2-CON-SE-ZA-1910 FF, SDR-2-CON-SE-ZA-1970 FF, SDR-2-CON-SE-ZA-2000 FF, SDR-2-CON-SE-ZA-2110 FF, SDR-2-CON-SE-ZA-2180 FF, SDR-2-CON-SE-ZA-2210 FF, SDR-2-CON-SE-ZA-2310 FF, SDR-2-CON-SE-ZA-2410 FF, SDR-2-CON-TS-ZA-1000 FF, SDR-2-CON-TS-ZA-3100 FF, SDR-2-CON-TS-ZA-3130 FF, SDR-2-CON-TS-ZA-3110 FF, SDR-2-CON-TS-ZA-3120 FF, SDR-2-CON-TS-ZA-3140 FF, SDR-2-CON-TS-ZA-2300 FF, SDR-2-CON-TS-ZA-2380 FF, SDR-2-CON-TS-ZA-2310 FF, SDR-2-CON-TS-ZA-2400 FF, SDR-2-CON-TS-ZA-2900 FF, SDR-2-CON-TS-ZA-3000 FF, SDR-2-CON-TS-ZA-2500 FF, SDR-2-CON-PW-ZA-1000 FF, SDR-2-CON-PW-ZA-2200 FF, SDR-2-CON-PW-ZA-1010 FF, SDR-2-CON-PW-ZA-2260 FF, SDR-2-CON-PW-ZA-2340 FF, SDR-2-CON-PW-ZA-2270 FF, SDR-2-CON-PW-ZA-2330 FF, SDR-2-CON-PW-ZA-2350 FF, SDR-2-CON-PW-ZG-1500 FF, SDR-2-CON-PW-ZG-1010 FF, SDR-2-CON-PW-ZA-2940 FF, SDR-2-CON-PW-ZA-2920 FF, SDR-2-CON-PW-ZA-3040 FF, SDR-2-CON-PW-ZA-3140 FF, SDR-2-CON-PW-ZA-2640 FF, SDR-2-CON-PW-ZA-2570 FF, SDR-2-CON-SL-ZA-1000 FF, SDR-2-CON-SL-ZA-1010 FF, SDR-2-CON-SL-ZA-2870 FF, SDR-2-CON-SL-ZA-2880 FF, SDR-2-CON-SL-ZA-1300 FF, SDR-2-CON-SL-ZA-1310 FF, SDR-2-CON-SL-ZA-2950 FF, SDR-2-CON-SL-ZA-2960 FF, SDR-2-CON-SL-ZA-2990 FF, SDR-2-CON-SL-ZA-3000 FF, SDR-2-CON-SL-ZA-3030 FF, SDR-2-CON-SL-ZA-3040 FF, SDR-2-CON-SL-ZA-3070 FF, SDR-2-CON-SL-ZA-3080 FF, SDR-2-CON-SL-ZA-3110 FF, SDR-2-CON-SL-ZA-3120 FF, SDR-2-CON-SL-ZA-3150 FF, SDR-2-CON-SL-ZA-3160 FF, SDR-2-CON-SL-ZA-3190 FF, SDR-2-CON-SL-ZA-3200 FF, SDR-2-CON-SL-ZA-2910 FF, SDR-2-CON-SL-ZA-2920 FF, SDR-2-CON-MV-ZA-1000 FF, SDR-2-CON-MV-ZA-1070 FF, SDR-2-CON-MV-ZA-1150 FF, SDR-2-CON-MV-ZA-1160 FF, SDR-2-CON-MV-ZA-1170 FF, SDR-2-CON-MV-ZA-1200 FF, SDR-2-CON-MV-ZA-1210 FF, SDR-2-CON-MV-ZA-1240 FF, SDR-2-CON-MV-ZA-1250 FF, SDR-2-CON-TE-ZA-1030 FF, SDR-2-CON-TE-ZA-1850 FF, SDR-2-CON-TE-ZA-3210 FF, SDR-2-CON-TE-ZA-3220 FF, SDR-2-CON-TE-ZA-3230 FF, SDR-2-CON-TE-ZA-3240 FF, SDR-2-CON-TE-ZA-3290 FF, SDR-2-CON-TE-ZA-3250 FF, SDR-2-CON-TE-ZA-3300 FF, SDR-2-CON-TE-ZA-3330 FF, SDR-2-CON-TE-ZA-3390 FF, SDR-2-CON-TE-ZA-3420 FF, SDR-2-CON-TE-ZA-3480 FF, SDR-2-CON-TE-ZA-3490 FF, SDR-2-CON-TE-ZA-3510 FF, SDR-2-CON-TE-ZA-3560 FF, SDR-2-CON-TE-ZA-3570 FF, SDR-2-CON-TE-ZA-3580 FF, SDR-2-CON-TE-ZA-3600 FF, SDR-2-CON-TE-ZA-3650 FF, SDR-2-CON-TE-ZA-3660 FF, SDR-2-CON-TE-ZA-3670 FF, SDR-2-CON-TE-ZA-3750 FF, SDR-2-CON-TE-ZA-3760 FF, SDR-2-CON-TE-ZA-3840 FF, SDR-2-CON-TE-ZA-3850 FF, SDR-2-CON-TE-ZA-3930 FF, SDR-2-CON-TE-ZA-4020 FF, SDR-2-CON-TE-ZA-4110 FF, SDR-2-CON-TE-ZA-4120 FF, SDR-2-CON-TE-ZA-4140 FF, SDR-2-CON-TE-ZA-4190 FF, SDR-2-CON-TE-ZA-4150 FF, SDR-2-CON-SL-ZA-3230 FF, SDR-2-CON-SL-ZA-3240 FF, SDR-2-CON-SL-ZA-3270 FF, SDR-2-CON-SL-ZA-3280 FF, SDR-2-CON-SL-ZA-3310 FF, SDR-2-CON-SL-ZA-3320 FF, SDR-2-CON-SL-ZA-3350 FF, SDR-2-CON-SL-ZA-3360 FF, SDR-2-CON-SL-ZA-3390 FF, SDR-2-CON-SL-ZA-3400 FF, SDR-2-CON-SL-ZA-3420 FF, SDR-2-CON-SL-ZA-3410 FF, SDR-2-CON-MV-ZA-1280 FF, SDR-2-CON-MV-ZA-1290 FF, SDR-2-CON-MV-ZA-1310 FF, SDR-2-CON-MV-ZA-1320 FF, SDR-2-CON-MV-ZA-1330 FF, SDR-2-CON-MV-ZA-1350 FF, SDR-2-CON-TE-ZA-4200 FF, SDR-2-CON-TE-ZA-4210 FF, SDR-2-CON-TE-ZA-4230 FF, SDR-2-CON-TE-ZA-4280 FF, SDR-2-CON-TE-ZA-4240 FF, SDR-2-CON-TE-ZA-4250 FF, SDR-2-CON-TE-ZA-4300 FF, SDR-2-CON-TE-ZA-4310 FF, SDR-2-CON-TE-ZA-4360 FF, SDR-2-CON-TE-ZA-4320 FF, SDR-2-CON-TE-ZA-4370 FF, SDR-2-CON-TE-ZA-4330 FF, SDR-2-CON-TE-ZA-4380 FF, SDR-2-CON-TE-ZA-4390 FF, SDR-2-CON-TE-ZA-4400 FF, SDR-2-CON-TE-ZA-4450 FF, SDR-2-CON-TE-ZA-4410 FF, SDR-2-CON-TE-ZA-4460 FF, SDR-2-CON-TE-ZA-4420 FF, SDR-2-CON-TE-ZA-4470 FF, SDR-2-CON-TE-ZA-4480 FF, SDR-2-CON-TE-ZA-4490 FF, SDR-2-CON-TE-ZA-4540 FF, SDR-2-CON-TE-ZA-4500 FF, SDR-2-CON-TE-ZA-4550 FF, SDR-2-CON-TE-ZA-4510 FF, SDR-2-CON-CC-ZA-1000 FF, SDR-2-CON-CC-ZA-1030 FF, SDR-2-CON-CC-ZA-1080 FF, SDR-2-CON-CC-ZA-1090 FF, SDR-2-CON-CC-ZA-1240 FF, SDR-2-CON-CC-ZA-1250 FF, SDR-2-CON-CC-ZA-1380 FF, SDR-2-CON-CC-ZA-1390 FF, SDR-2-CON-CC-ZA-1670 FF, SDR-2-CON-CC-ZA-1700 FF, SDR-2-CON-CC-ZA-1750 FF, SDR-2-CON-CC-ZA-1790 FF, SDR-2-CON-CC-ZA-1830 FF, SDR-2-CON-ST-ZA-4020 FF, SDR-2-CON-SE-ZA-1430 FF, SDR-2-CON-SE-ZA-1440 FF, SDR-2-CON-SE-ZA-1530 FF, SDR-2-CON-SE-ZA-1540 FF, SDR-2-CON-SE-ZA-1630 FF, SDR-2-CON-SE-ZA-1730 FF, SDR-2-CON-SE-ZA-1740 FF, SDR-2-CON-SE-ZA-1830 FF, SDR-2-CON-SE-ZA-1840 FF, SDR-2-CON-SE-ZA-1930 FF, SDR-2-CON-SE-ZA-1940 FF, SDR-2-CON-SE-ZA-1980 FF, SDR-2-CON-SE-ZA-2030 FF, SDR-2-CON-SE-ZA-2010 FF, SDR-2-CON-SE-ZA-2040 FF, SDR-2-CON-TS-ZA-1900 FF, SDR-2-CON-TS-ZA-1010 FF, SDR-2-CON-TS-ZA-1080 FF, SDR-2-CON-TS-ZA-1910 FF, SDR-2-CON-TS-ZA-1040 FF, SDR-2-CON-TS-ZA-1020 FF, SDR-2-CON-TS-ZA-1050 FF, SDR-2-CON-TS-ZA-1060 FF, SDR-2-CON-TS-ZA-1070 FF, SDR-2-CON-TS-ZA-2200 FF, SDR-2-CON-TS-ZA-2280 FF, SDR-2-CON-TS-ZA-2210 FF, SDR-2-CON-TS-ZA-2270 FF, SDR-2-CON-TS-ZA-2290 FF, SDR-2-CON-TS-ZA-2230 FF, SDR-2-CON-TS-ZA-2240 FF, SDR-2-CON-TS-ZA-2250 FF, SDR-2-CON-TS-ZA-2260 FF, SDR-2-CON-TS-ZA-1180 FF, SDR-2-CON-TS-ZA-1920 FF, SDR-2-CON-TS-ZA-1190 FF, SDR-2-CON-TS-ZA-1260 FF, SDR-2-CON-TS-ZA-1930 FF, SDR-2-CON-TS-ZA-2010 FF, SDR-2-CON-TS-ZA-2000 FF, SDR-2-CON-TS-ZA-2020 FF, SDR-2-CON-TS-ZA-2030 FF, SDR-2-CON-TS-ZA-2040 FF, SDR-2-CON-TS-ZA-1270 FF, SDR-2-CON-TS-ZA-1940 FF, SDR-2-CON-TS-ZA-1280 FF, SDR-2-CON-TS-ZA-1350 FF, SDR-2-CON-TS-ZA-1950 FF, SDR-2-CON-TS-ZA-2060 FF, SDR-2-CON-TS-ZA-2050 FF, SDR-2-CON-TS-ZA-2070 FF, SDR-2-CON-TS-ZA-2080 FF, SDR-2-CON-TS-ZA-2090 FF, SDR-2-CON-TS-ZA-2660 FF, SDR-2-CON-TS-ZA-2650 FF, SDR-2-CON-TS-ZA-2670 FF, SDR-2-CON-TS-ZA-2680 FF, SDR-2-CON-TS-ZA-2690 FF, SDR-2-CON-TS-ZA-2700 FF, SDR-2-CON-TS-ZA-2730 FF, SDR-2-CON-TS-ZA-2710 FF, SDR-2-CON-TS-ZA-2720 FF, SDR-2-CON-TS-ZA-2740 FF, SDR-2-CON-TS-ZA-2760 FF, SDR-2-CON-TS-ZA-2750 FF, SDR-2-CON-TS-ZA-2770 FF, SDR-2-CON-TS-ZA-2780 FF, SDR-2-CON-TS-ZA-2800 FF, SDR-2-CON-TS-ZA-2830 FF, SDR-2-CON-TS-ZA-2810 FF, SDR-2-CON-TS-ZA-2820 FF, SDR-2-CON-TS-ZA-2840 FF, SDR-2-CON-TS-ZA-2860 FF, SDR-2-CON-TS-ZA-2850 FF, SDR-2-CON-TS-ZA-2870 FF, SDR-2-CON-TS-ZA-2880 FF, SDR-2-CON-TS-ZA-2890 FF, SDR-2-CON-TS-ZA-1630 FF, SDR-2-CON-TS-ZA-1960 FF, SDR-2-CON-TS-ZA-1640 FF, SDR-2-CON-TS-ZA-1710 FF, SDR-2-CON-TS-ZA-1970 FF, SDR-2-CON-TS-ZA-2110 FF, SDR-2-CON-TS-ZA-2100 FF, SDR-2-CON-TS-ZA-2120 FF, SDR-2-CON-TS-ZA-2130 FF, SDR-2-CON-TS-ZA-2140 FF, SDR-2-CON-TS-ZA-1720 FF, SDR-2-CON-TS-ZA-1980 FF, SDR-2-CON-TS-ZA-1730 FF, SDR-2-CON-TS-ZA-1800 FF, SDR-2-CON-TS-ZA-1990 FF, SDR-2-CON-TS-ZA-2160 FF, SDR-2-CON-TS-ZA-2150 FF, SDR-2-CON-TS-ZA-2170 FF, SDR-2-CON-TS-ZA-2180 FF, SDR-2-CON-TS-ZA-2190 FF, SDR-2-CON-TS-ZA-3160 FF, SDR-2-CON-TS-ZA-3150 FF, SDR-2-CON-TS-ZA-3170 FF, SDR-2-CON-TS-ZA-3180 FF, SDR-2-CON-TS-ZA-3190 FF, SDR-2-CON-TS-ZA-2370 FF, SDR-2-CON-TS-ZA-2390 FF, SDR-2-CON-TS-ZA-2330 FF, SDR-2-CON-TS-ZA-2320 FF, SDR-2-CON-TS-ZA-2340 FF, SDR-2-CON-TS-ZA-2350 FF, SDR-2-CON-TS-ZA-2360 FF, SDR-2-CON-TS-ZA-2430 FF, SDR-2-CON-TS-ZA-2410 FF, SDR-2-CON-TS-ZA-2420 FF, SDR-2-CON-TS-ZA-2440 FF, SDR-2-CON-TS-ZA-2460 FF, SDR-2-CON-TS-ZA-2450 FF, SDR-2-CON-TS-ZA-2470 FF, SDR-2-CON-TS-ZA-2480 FF, SDR-2-CON-TS-ZA-2490 FF, SDR-2-CON-TS-ZA-2930 FF, SDR-2-CON-TS-ZA-2910 FF, SDR-2-CON-TS-ZA-2920 FF, SDR-2-CON-TS-ZA-2940 FF, SDR-2-CON-TS-ZA-2960 FF, SDR-2-CON-TS-ZA-2950 FF, SDR-2-CON-TS-ZA-2970 FF, SDR-2-CON-TS-ZA-2980 FF, SDR-2-CON-TS-ZA-2990 FF, SDR-2-CON-TS-ZA-3030 FF, SDR-2-CON-TS-ZA-3010 FF, SDR-2-CON-TS-ZA-3020 FF, SDR-2-CON-TS-ZA-3040 FF, SDR-2-CON-TS-ZA-3060 FF, SDR-2-CON-TS-ZA-3050 FF, SDR-2-CON-TS-ZA-2530 FF, SDR-2-CON-TS-ZA-2510 FF, SDR-2-CON-TS-ZA-2520 FF, SDR-2-CON-TS-ZA-2560 FF, SDR-2-CON-TS-ZA-2550 FF, SDR-2-CON-TS-ZA-2570 FF, SDR-2-CON-TS-ZA-2580 FF, SDR-2-CON-TS-ZA-2590 FF, SDR-2-CON-PW-ZA-1080 FF, SDR-2-CON-PW-ZA-2210 FF, SDR-2-CON-PW-ZA-1040 FF, SDR-2-CON-PW-ZA-1020 FF, SDR-2-CON-PW-ZA-1050 FF, SDR-2-CON-PW-ZA-1030 FF, SDR-2-CON-PW-ZA-1070 FF, SDR-2-CON-PW-ZA-2300 FF, SDR-2-CON-PW-ZA-2280 FF, SDR-2-CON-PW-ZA-2310 FF, SDR-2-CON-PW-ZA-2290 FF, SDR-2-CON-PW-ZA-1200 FF, SDR-2-CON-PW-ZA-2220 FF, SDR-2-CON-PW-ZA-1210 FF, SDR-2-CON-PW-ZA-1280 FF, SDR-2-CON-PW-ZA-2230 FF, SDR-2-CON-PW-ZA-2680 FF, SDR-2-CON-PW-ZA-2660 FF, SDR-2-CON-PW-ZA-2690 FF, SDR-2-CON-PW-ZA-2670 FF, SDR-2-CON-PW-ZA-2700 FF, SDR-2-CON-PW-ZA-2710 FF, SDR-2-CON-PW-ZA-2780 FF, SDR-2-CON-PW-ZA-2760 FF, SDR-2-CON-PW-ZA-2790 FF, SDR-2-CON-PW-ZA-2770 FF, SDR-2-CON-PW-ZA-2800 FF, SDR-2-CON-PW-ZA-1400 FF, SDR-2-CON-PW-ZA-2240 FF, SDR-2-CON-PW-ZA-1410 FF, SDR-2-CON-PW-ZA-1480 FF, SDR-2-CON-PW-ZA-2250 FF, SDR-2-CON-PW-ZA-3230 FF, SDR-2-CON-PW-ZA-3210 FF, SDR-2-CON-PW-ZA-3240 FF, SDR-2-CON-PW-ZA-3220 FF, SDR-2-CON-PW-ZA-3260 FF, SDR-2-CON-PW-ZA-3290 FF, SDR-2-CON-PW-ZA-3270 FF, SDR-2-CON-PW-ZA-3280 FF, SDR-2-CON-PW-ZA-3300 FF, SDR-2-CON-PW-ZA-3330 FF, SDR-2-CON-PW-ZA-3310 FF, SDR-2-CON-PW-ZA-3340 FF, SDR-2-CON-PW-ZA-3320 FF, SDR-2-CON-PW-ZA-3360 FF, SDR-2-CON-PW-ZA-3390 FF, SDR-2-CON-PW-ZA-3370 FF, SDR-2-CON-PW-ZA-3380 FF, SDR-2-CON-PW-ZA-3400 FF, SDR-2-CON-PW-ZA-3460 FF, SDR-2-CON-PW-ZA-3490 FF, SDR-2-CON-PW-ZA-3470 FF, SDR-2-CON-PW-ZA-3480 FF, SDR-2-CON-PW-ZA-3500 FF, SDR-2-CON-PW-ZA-3530 FF, SDR-2-CON-PW-ZA-3510 FF, SDR-2-CON-PW-ZA-3540 FF, SDR-2-CON-PW-ZA-3520 FF, SDR-2-CON-PW-ZA-3550 FF, SDR-2-CON-PW-ZA-3560 FF, SDR-2-CON-PW-ZA-3590 FF, SDR-2-CON-PW-ZA-3570 FF, SDR-2-CON-PW-ZA-3580 FF, SDR-2-CON-PW-ZA-3600 FF, SDR-2-CON-PW-ZA-2810 FF, SDR-2-CON-PW-ZA-2840 FF, SDR-2-CON-PW-ZA-2820 FF, SDR-2-CON-PW-ZA-2830 FF, SDR-2-CON-PW-ZA-2880 FF, SDR-2-CON-PW-ZA-2860 FF, SDR-2-CON-PW-ZA-2890 FF, SDR-2-CON-PW-ZA-2870 FF, SDR-2-CON-PW-ZA-2360 FF, SDR-2-CON-PW-ZA-2440 FF, SDR-2-CON-PW-ZA-2370 FF, SDR-2-CON-PW-ZA-2430 FF, SDR-2-CON-PW-ZA-2450 FF, SDR-2-CON-PW-ZA-2400 FF, SDR-2-CON-PW-ZA-2380 FF, SDR-2-CON-PW-ZA-2410 FF, SDR-2-CON-PW-ZA-2390 FF, SDR-2-CON-PW-ZA-2460 FF, SDR-2-CON-PW-ZA-2540 FF, SDR-2-CON-PW-ZA-2470 FF, SDR-2-CON-PW-ZA-2530 FF, SDR-2-CON-PW-ZA-2500 FF, SDR-2-CON-PW-ZA-2480 FF, SDR-2-CON-PW-ZA-2510 FF, SDR-2-CON-PW-ZA-2490 FF, SDR-2-CON-PW-ZA-2520 FF, SDR-2-CON-PW-ZG-1080 FF, SDR-2-CON-PW-ZG-1510 FF, SDR-2-CON-PW-ZA-3680 FF, SDR-2-CON-PW-ZA-3660 FF, SDR-2-CON-PW-ZA-3690 FF, SDR-2-CON-PW-ZA-3670 FF, SDR-2-CON-PW-ZA-3700 FF, SDR-2-CON-PW-ZA-2930 FF, SDR-2-CON-PW-ZA-2950 FF, SDR-2-CON-PW-ZA-2980 FF, SDR-2-CON-PW-ZA-2960 FF, SDR-2-CON-PW-ZA-2990 FF, SDR-2-CON-PW-ZA-2970 FF, SDR-2-CON-PW-ZA-3030 FF, SDR-2-CON-PW-ZA-3050 FF, SDR-2-CON-PW-ZA-3080 FF, SDR-2-CON-PW-ZA-3060 FF, SDR-2-CON-PW-ZA-3090 FF, SDR-2-CON-PW-ZA-3070 FF, SDR-2-CON-PW-ZA-3100 FF, SDR-2-CON-PW-ZA-3130 FF, SDR-2-CON-PW-ZA-3150 FF, SDR-2-CON-PW-ZA-3180 FF, SDR-2-CON-PW-ZA-3160 FF, SDR-2-CON-PW-ZA-3190 FF, SDR-2-CON-PW-ZA-3170 FF, SDR-2-CON-PW-ZA-3200 FF, SDR-2-CON-PW-ZA-2630 FF, SDR-2-CON-PW-ZA-2650 FF, SDR-2-CON-PW-ZA-2600 FF, SDR-2-CON-PW-ZA-2580 FF, SDR-2-CON-PW-ZA-2610 FF, SDR-2-CON-PW-ZA-2590 FF, SDR-2-CON-PW-ZA-2620 FF, SDR-2-CON-SL-ZA-1110 FF, SDR-2-CON-SL-ZA-1100 FF, SDR-2-CON-SL-ZA-2900 FF, SDR-2-CON-SL-ZA-2890 FF, SDR-2-CON-SL-ZA-1410 FF, SDR-2-CON-SL-ZA-1400 FF, SDR-2-CON-SL-ZA-2980 FF, SDR-2-CON-SL-ZA-2970 FF, SDR-2-CON-SL-ZA-3020 FF, SDR-2-CON-SL-ZA-3010 FF, SDR-2-CON-SL-ZA-3060 FF, SDR-2-CON-SL-ZA-3050 FF, SDR-2-CON-SL-ZA-3100 FF, SDR-2-CON-SL-ZA-3090 FF, SDR-2-CON-SL-ZA-3140 FF, SDR-2-CON-SL-ZA-3130 FF, SDR-2-CON-SL-ZA-3180 FF, SDR-2-CON-SL-ZA-3170 FF, SDR-2-CON-SL-ZA-3220 FF, SDR-2-CON-SL-ZA-3210 FF, SDR-2-CON-SL-ZA-2940 FF, SDR-2-CON-SL-ZA-2930 FF, SDR-2-CON-SL-ZA-2650 FF, SDR-2-CON-SL-ZA-2760 FF, SDR-2-CON-SL-ZA-2770 FF, SDR-2-CON-SL-ZA-2780 FF, SDR-2-CON-SL-ZA-2660 FF, SDR-2-CON-SL-ZA-2790 FF, SDR-2-CON-SL-ZA-2800 FF, SDR-2-CON-SL-ZA-2670 FF, SDR-2-CON-SL-ZA-2810 FF, SDR-2-CON-SL-ZA-2820 FF, SDR-2-CON-SL-ZA-2680 FF, SDR-2-CON-SL-ZA-2830 FF, SDR-2-CON-SL-ZA-2840 FF, SDR-2-CON-SL-ZA-2690 FF, SDR-2-CON-SL-ZA-2850 FF, SDR-2-CON-SL-ZA-2860 FF, SDR-2-CON-MV-ZA-1100 FF, SDR-2-CON-MV-ZA-1190 FF, SDR-2-CON-MV-ZA-1180 FF, SDR-2-CON-MV-ZA-1230 FF, SDR-2-CON-MV-ZA-1220 FF, SDR-2-CON-MV-ZA-1270 FF, SDR-2-CON-MV-ZA-1260 FF, SDR-2-CON-TE-ZA-1040 FF, SDR-2-CON-TE-ZA-1050 FF, SDR-2-CON-TE-ZA-1060 FF, SDR-2-CON-TE-ZA-3280 FF, SDR-2-CON-TE-ZA-3260 FF, SDR-2-CON-TE-ZA-3270 FF, SDR-2-CON-TE-ZA-3310 FF, SDR-2-CON-TE-ZA-3320 FF, SDR-2-CON-TE-ZA-3370 FF, SDR-2-CON-TE-ZA-3380 FF, SDR-2-CON-TE-ZA-3340 FF, SDR-2-CON-TE-ZA-3350 FF, SDR-2-CON-TE-ZA-3360 FF, SDR-2-CON-TE-ZA-3400 FF, SDR-2-CON-TE-ZA-3410 FF, SDR-2-CON-TE-ZA-3460 FF, SDR-2-CON-TE-ZA-3470 FF, SDR-2-CON-TE-ZA-3430 FF, SDR-2-CON-TE-ZA-3440 FF, SDR-2-CON-TE-ZA-3450 FF, SDR-2-CON-TE-ZA-3500 FF, SDR-2-CON-TE-ZA-3550 FF, SDR-2-CON-TE-ZA-3520 FF, SDR-2-CON-TE-ZA-3530 FF, SDR-2-CON-TE-ZA-3540 FF, SDR-2-CON-TE-ZA-3590 FF, SDR-2-CON-TE-ZA-3640 FF, SDR-2-CON-TE-ZA-3610 FF, SDR-2-CON-TE-ZA-3620 FF, SDR-2-CON-TE-ZA-3630 FF, SDR-2-CON-TE-ZA-3680 FF, SDR-2-CON-TE-ZA-3730 FF, SDR-2-CON-TE-ZA-3690 FF, SDR-2-CON-TE-ZA-3740 FF, SDR-2-CON-TE-ZA-3700 FF, SDR-2-CON-TE-ZA-3710 FF, SDR-2-CON-TE-ZA-3720 FF, SDR-2-CON-TE-ZA-3770 FF, SDR-2-CON-TE-ZA-3820 FF, SDR-2-CON-TE-ZA-3780 FF, SDR-2-CON-TE-ZA-3830 FF, SDR-2-CON-TE-ZA-3790 FF, SDR-2-CON-TE-ZA-3800 FF, SDR-2-CON-TE-ZA-3810 FF, SDR-2-CON-TE-ZA-3860 FF, SDR-2-CON-TE-ZA-3910 FF, SDR-2-CON-TE-ZA-3870 FF, SDR-2-CON-TE-ZA-3920 FF, SDR-2-CON-TE-ZA-3880 FF, SDR-2-CON-TE-ZA-3890 FF, SDR-2-CON-TE-ZA-3900 FF, SDR-2-CON-TE-ZA-3940 FF, SDR-2-CON-TE-ZA-3950 FF, SDR-2-CON-TE-ZA-4000 FF, SDR-2-CON-TE-ZA-3960 FF, SDR-2-CON-TE-ZA-4010 FF, SDR-2-CON-TE-ZA-3970 FF, SDR-2-CON-TE-ZA-3980 FF, SDR-2-CON-TE-ZA-3990 FF, SDR-2-CON-TE-ZA-4030 FF, SDR-2-CON-TE-ZA-4040 FF, SDR-2-CON-TE-ZA-4090 FF, SDR-2-CON-TE-ZA-4050 FF, SDR-2-CON-TE-ZA-4100 FF, SDR-2-CON-TE-ZA-4060 FF, SDR-2-CON-TE-ZA-4070 FF, SDR-2-CON-TE-ZA-4080 FF, SDR-2-CON-TE-ZA-4130 FF, SDR-2-CON-TE-ZA-4180 FF, SDR-2-CON-TE-ZA-4160 FF, SDR-2-CON-TE-ZA-4170 FF, SDR-2-CON-SL-ZA-3260 FF, SDR-2-CON-SL-ZA-3250 FF, SDR-2-CON-SL-ZA-3300 FF, SDR-2-CON-SL-ZA-3290 FF, SDR-2-CON-SL-ZA-3340 FF, SDR-2-CON-SL-ZA-3330 FF, SDR-2-CON-SL-ZA-3380 FF, SDR-2-CON-SL-ZA-3370 FF, SDR-2-CON-SL-ZA-3430 FF, SDR-2-CON-SL-ZA-3440 FF, SDR-2-CON-SL-ZA-3450 FF, SDR-2-CON-SL-ZA-3460 FF, SDR-2-CON-SL-ZA-3470 FF, SDR-2-CON-SL-ZA-3480 FF, SDR-2-CON-SL-ZA-3490 FF, SDR-2-CON-SL-ZA-3500 FF, SDR-2-CON-SL-ZA-3510 FF, SDR-2-CON-SL-ZA-3520 FF, SDR-2-CON-SL-ZA-3530 FF, SDR-2-CON-SL-ZA-3540 FF, SDR-2-CON-SL-ZA-3550 FF, SDR-2-CON-SL-ZA-3560 FF, SDR-2-CON-SL-ZA-3570 FF, SDR-2-CON-SL-ZA-3580 FF, SDR-2-CON-MV-ZA-1300 FF, SDR-2-CON-MV-ZA-1340 FF, SDR-2-CON-TE-ZA-4220 FF, SDR-2-CON-TE-ZA-4270 FF, SDR-2-CON-TE-ZA-4260 FF, SDR-2-CON-TE-ZA-4340 FF, SDR-2-CON-TE-ZA-4350 FF, SDR-2-CON-TE-ZA-4430 FF, SDR-2-CON-TE-ZA-4440 FF, SDR-2-CON-TE-ZA-4520 FF, SDR-2-CON-TE-ZA-4530 FF, SDR-2-CON-CC-ZA-1050 FF, SDR-2-CON-CC-ZA-1060 FF, SDR-2-CON-CC-ZA-1100 FF, SDR-2-CON-CC-ZA-1110 FF, SDR-2-CON-CC-ZA-1260 FF, SDR-2-CON-CC-ZA-1270 FF, SDR-2-CON-CC-ZA-1400 FF, SDR-2-CON-CC-ZA-1410 FF, SDR-2-CON-CC-ZA-1500 FF, SDR-2-CON-CC-ZA-1510 FF, SDR-2-CON-CC-ZA-1520 FF, SDR-2-CON-CC-ZA-1530 FF, SDR-2-CON-CC-ZA-1540 FF, SDR-2-CON-CC-ZA-1550 FF, SDR-2-CON-CC-ZA-1560 FF, SDR-2-CON-CC-ZA-1570 FF, SDR-2-CON-CC-ZA-1580 FF, SDR-2-CON-CC-ZA-1590 FF, SDR-2-CON-CC-ZA-1610 FF, SDR-2-CON-CC-ZA-1620 FF, SDR-2-CON-CC-ZA-1630 FF, SDR-2-CON-CC-ZA-1640 FF, SDR-2-CON-CC-ZA-1650 FF, SDR-2-CON-CC-ZA-1660 FF, SDR-2-CON-CC-ZA-1720 FF, SDR-2-CON-CC-ZA-1730 FF, SDR-2-CON-CC-ZA-1760 FF, SDR-2-CON-CC-ZA-1770 FF, SDR-2-CON-CC-ZA-1780 FF, SDR-2-CON-CC-ZA-1800 FF, SDR-2-CON-CC-ZA-1810 FF, SDR-2-CON-CC-ZA-1820 FF, SDR-2-CON-CC-ZA-1840 FF, SDR-2-CON-CC-ZA-1850 FF, SDR-2-CON-CC-ZA-1860 FF, SDR-2-CON-CC-ZG-1500 FF, SDR-2-CON-CC-ZG-1540 FF, SDR-2-CON-CC-ZG-1550 FF, SDR-2-CON-CC-ZG-1510 FF, SDR-2-CON-CC-ZG-1560 FF, SDR-2-CON-CC-ZG-1570 FF, SDR-2-CON-CC-ZG-1580 FF, SDR-2-CON-CC-ZG-1520 FF, SDR-2-CON-CC-ZG-1590 FF, SDR-2-CON-CC-ZG-1530 FF, SDR-2-CON-CC-ZG-1600 FF, SDR-2-CON-CC-ZG-1610 FF, SDR-2-CON-CC-ZG-1620 FF, SDR-2-CON-CC-ZG-1630 FF, SDR-2-CON-CC-ZG-1640 FF, SDR-2-CON-CC-ZG-1650 FF, SDR-2-CON-CC-ZG-1660 FF, SDR-2-CON-SE-ZA-2690 FF, SDR-2-MILS-1050 FF, SDR-2-CON-ST-ZA-5970 FF, SDR-2-CON-SE-ZA-1000, SDR-2-CON-SE-ZA-1420, SDR-2-CON-SE-ZA-1030, SDR-2-CON-SE-ZA-1450, SDR-2-CON-SE-ZA-1460, SDR-2-CON-SE-ZA-1520 |
| 8 | **install** | 2027-05-22 → 2027-06-01 (+10d) | 2027-06-05 → 2027-06-15 (+10d) |  |  |
| SDR-2-CON-IR-ZA-1010 | Installation of HDPE Pipe | 2027-05-22 → 2027-06-01 (+10d) | 2027-06-05 → 2027-06-15 (+10d) | 12d → 3d |  |
| 9 | **Finishing** | 2027-06-06 → 2027-06-16 (+10d) | 2027-06-16 → 2027-06-27 (+11d) |  |  |
| SDR-2-CON-IR-ZA-1020 | Finishing Works for irrigation | 2027-06-06 → 2027-06-16 (+10d) | 2027-06-16 → 2027-06-27 (+11d) | 12d → 3d |  |
| 10 | **Repairs** | 2027-06-17 → 2027-06-28 (+11d) | 2027-06-21 → 2027-07-01 (+10d) |  |  |
| SDR-2-CON-IR-ZA-1030 | Repair for irrigation Works | 2027-06-17 → 2027-06-28 (+11d) | 2027-06-21 → 2027-07-01 (+10d) | 12d → 3d |  |
| 2 | **IRRIGATION WORKS IN ( PH2-COL-MC20 )** | 2027-05-08 → 2027-05-06 (-2d) |  |  |  |
| 7 | **Pre install** | 2027-05-08 → 2027-05-06 (-2d) |  |  |  |
| SDR-2-CON-IR-ZA-2120 | Pre Install for irrigation Works | 2027-05-08 → 2027-05-06 (-2d) |  | 9d → 9.74d |  |
| 8 | **install** | 2027-05-25 → 2027-05-24 (-1d) |  |  |  |
| SDR-2-CON-IR-ZA-2130 | Installation of HDPE Pipe | 2027-05-25 → 2027-05-24 (-1d) |  | 9d → 9.74d |  |
| 9 | **Finishing** | 2027-06-08 → 2027-06-07 (-1d) |  |  |  |
| SDR-2-CON-IR-ZA-2140 | Finishing Works for irrigation | 2027-06-08 → 2027-06-07 (-1d) |  | 10d → 10.74d |  |
| 10 | **Repairs** | 2027-06-19 → 2027-06-17 (-2d) |  |  |  |
| SDR-2-CON-IR-ZA-2150 | Repair for irrigation Works | 2027-06-19 → 2027-06-17 (-2d) |  | 10d → 10.74d |  |
| 11 | **IRRIGATION WORKS IN ( PH2-A-MCA0 )** | 2027-05-08 → 2027-05-06 (-2d) |  |  |  |
| 7 | **Pre install** | 2027-05-08 → 2027-05-06 (-2d) |  |  |  |
| SDR-2-CON-IR-ZA-2160 | Pre Install for irrigation Works | 2027-05-08 → 2027-05-06 (-2d) |  | 6d → 6.74d |  |
| 8 | **install** | 2027-05-27 → 2027-05-26 (-1d) |  |  |  |
| SDR-2-CON-IR-ZA-2170 | Installation of HDPE Pipe | 2027-05-27 → 2027-05-26 (-1d) |  | 6d → 6.74d |  |
| 9 | **Finishing** | 2027-06-12 → 2027-06-10 (-2d) |  |  |  |
| SDR-2-CON-IR-ZA-2180 | Finishing Works for irrigation | 2027-06-12 → 2027-06-10 (-2d) |  | 6d → 6.74d |  |
| 10 | **Repairs** | 2027-06-22 → 2027-06-21 (-1d) |  |  |  |
| SDR-2-CON-IR-ZA-2190 | Repair for irrigation Works | 2027-06-22 → 2027-06-21 (-1d) |  | 6d → 6.74d |  |
| 12 | **IRRIGATION WORKS IN ( PH2-A-MCB0 )** | 2027-05-08 → 2027-05-06 (-2d) |  |  |  |
| 7 | **Pre install** | 2027-05-08 → 2027-05-06 (-2d) |  |  |  |
| SDR-2-CON-IR-ZA-2200 | Pre Install for irrigation Works | 2027-05-08 → 2027-05-06 (-2d) |  | 6d → 6.74d |  |
| 8 | **install** | 2027-05-30 → 2027-05-29 (-1d) |  |  |  |
| SDR-2-CON-IR-ZA-2210 | Installation of HDPE Pipe | 2027-05-30 → 2027-05-29 (-1d) |  | 6d → 6.74d |  |
| 9 | **Finishing** | 2027-06-13 → 2027-06-12 (-1d) |  |  |  |
| SDR-2-CON-IR-ZA-2220 | Finishing Works for irrigation | 2027-06-13 → 2027-06-12 (-1d) |  | 6d → 6.74d |  |
| 10 | **Repairs** | 2027-06-22 → 2027-06-21 (-1d) |  |  |  |
| SDR-2-CON-IR-ZA-2230 | Repair for irrigation Works | 2027-06-22 → 2027-06-21 (-1d) |  | 6d → 6.74d |  |
| 8 | **install** | 2027-05-30 → 2027-05-29 (-1d) |  |  |  |
| SDR-2-CON-IR-ZA-2250 | Installation of HDPE Pipe | 2027-05-30 → 2027-05-29 (-1d) |  | 6d → 6.74d |  |
| 9 | **Finishing** | 2027-06-14 → 2027-06-13 (-1d) |  |  |  |
| SDR-2-CON-IR-ZA-2260 | Finishing Works for irrigation | 2027-06-14 → 2027-06-13 (-1d) |  | 6d → 6.74d |  |
| 10 | **Repairs** | 2027-06-26 → 2027-06-24 (-2d) |  |  |  |
| SDR-2-CON-IR-ZA-2270 | Repair for irrigation Works | 2027-06-26 → 2027-06-24 (-2d) |  | 6d → 6.74d |  |
| 9 | **Finishing** | 2027-06-06 → 2027-06-05 (-1d) |  |  |  |
| SDR-2-CON-IR-ZA-2300 | Finishing Works for irrigation | 2027-06-06 → 2027-06-05 (-1d) |  | 18d → 18.74d |  |
| 10 | **Repairs** | 2027-06-10 → 2027-06-09 (-1d) |  |  |  |
| SDR-2-CON-IR-ZA-2310 | Repair for irrigation Works | 2027-06-10 → 2027-06-09 (-1d) |  | 18d → 18.74d |  |
| 9 | **Finishing** | 2027-06-14 → 2027-06-13 (-1d) |  |  |  |
| SDR-2-CON-IR-ZA-2340 | Finishing Works for irrigation | 2027-06-14 → 2027-06-13 (-1d) |  | 6d → 6.74d |  |
| 10 | **Repairs** | 2027-06-26 → 2027-06-24 (-2d) |  |  |  |
| SDR-2-CON-IR-ZA-2350 | Repair for irrigation Works | 2027-06-26 → 2027-06-24 (-2d) |  | 6d → 6.74d |  |
| 6 | **IRRIGATION WORKS IN ( PH2-A-MCF0 )** | 2027-05-08 → 2027-05-06 (-2d) |  |  |  |
| 7 | **Pre install** | 2027-05-08 → 2027-05-06 (-2d) |  |  |  |
| SDR-2-CON-IR-ZA-2360 | Pre Install for irrigation Works | 2027-05-08 → 2027-05-06 (-2d) |  | 6d → 6.74d |  |
| 8 | **install** | 2027-05-30 → 2027-05-29 (-1d) |  |  |  |
| SDR-2-CON-IR-ZA-2370 | Installation of HDPE Pipe | 2027-05-30 → 2027-05-29 (-1d) |  | 6d → 6.74d |  |
| 9 | **Finishing** | 2027-06-14 → 2027-06-13 (-1d) |  |  |  |
| SDR-2-CON-IR-ZA-2380 | Finishing Works for irrigation | 2027-06-14 → 2027-06-13 (-1d) |  | 6d → 6.74d |  |
| 10 | **Repairs** | 2027-06-26 → 2027-06-24 (-2d) |  |  |  |
| SDR-2-CON-IR-ZA-2390 | Repair for irrigation Works | 2027-06-26 → 2027-06-24 (-2d) |  | 6d → 6.74d |  |
| 7 | **IRRIGATION WORKS IN ( PH2-A-MCG0 )** | 2027-05-08 → 2027-05-06 (-2d) |  |  |  |
| 7 | **Pre install** | 2027-05-08 → 2027-05-06 (-2d) |  |  |  |
| SDR-2-CON-IR-ZA-2400 | Pre Install for irrigation Works | 2027-05-08 → 2027-05-06 (-2d) |  | 6d → 6.74d |  |
| 8 | **install** | 2027-05-30 → 2027-05-29 (-1d) |  |  |  |
| SDR-2-CON-IR-ZA-2410 | Installation of HDPE Pipe | 2027-05-30 → 2027-05-29 (-1d) |  | 6d → 6.74d |  |
| 9 | **Finishing** | 2027-06-14 → 2027-06-13 (-1d) |  |  |  |
| SDR-2-CON-IR-ZA-2420 | Finishing Works for irrigation | 2027-06-14 → 2027-06-13 (-1d) |  | 6d → 6.74d |  |
| 10 | **Repairs** | 2027-06-27 → 2027-06-26 (-1d) |  |  |  |
| SDR-2-CON-IR-ZA-2430 | Repair for irrigation Works | 2027-06-27 → 2027-06-26 (-1d) |  | 6d → 6.74d |  |

| ID | Task | Start | Finish | Total float |
| --- | --- | --- | --- | --- |
| 8 | **IRRIGATION WORKS IN ( PH2-A-MCH0 )** | 2027-05-08 → 2027-05-06 (-2d) |  |  |
| 7 | **Pre install** | 2027-05-08 → 2027-05-06 (-2d) |  |  |
| SDR-2-CON-IR-ZA-2440 | Pre Install for irrigation Works | 2027-05-08 → 2027-05-06 (-2d) |  | 6d → 6.74d |
| 8 | **install** | 2027-05-30 → 2027-05-29 (-1d) |  |  |
| SDR-2-CON-IR-ZA-2450 | Installation of HDPE Pipe | 2027-05-30 → 2027-05-29 (-1d) |  | 6d → 6.74d |
| 9 | **Finishing** | 2027-06-14 → 2027-06-13 (-1d) |  |  |
| SDR-2-CON-IR-ZA-2460 | Finishing Works for irrigation | 2027-06-14 → 2027-06-13 (-1d) |  | 6d → 6.74d |
| 10 | **Repairs** | 2027-06-27 → 2027-06-26 (-1d) |  |  |
| SDR-2-CON-IR-ZA-2470 | Repair for irrigation Works | 2027-06-27 → 2027-06-26 (-1d) |  | 6d → 6.74d |
| 8 | **install** |  | 2027-06-01 → 2027-05-27 (-5d) |  |
| SDR-2-CON-IR-ZA-2490 | Installation of HDPE Pipe |  | 2027-06-01 → 2027-05-27 (-5d) | 16d → 20.74d |
| 9 | **Finishing** | 2027-06-02 → 2027-05-27 (-6d) | 2027-06-14 → 2027-06-09 (-5d) |  |
| SDR-2-CON-IR-ZA-2500 | Finishing Works for irrigation | 2027-06-02 → 2027-05-27 (-6d) | 2027-06-14 → 2027-06-09 (-5d) | 16d → 20.74d |
| 10 | **Repairs** | 2027-06-27 → 2027-06-26 (-1d) |  |  |
| SDR-2-CON-IR-ZA-2510 | Repair for irrigation Works | 2027-06-27 → 2027-06-26 (-1d) |  | 6d → 6.74d |
| 9 | **Finishing** | 2027-05-30 → 2027-05-29 (-1d) |  |  |
| SDR-2-CON-IR-ZA-2540 | Finishing Works for irrigation | 2027-05-30 → 2027-05-29 (-1d) |  | 19d → 19.74d |
| 10 | **Repairs** | 2027-06-27 → 2027-06-26 (-1d) |  |  |
| SDR-2-CON-IR-ZA-2550 | Repair for irrigation Works | 2027-06-27 → 2027-06-26 (-1d) |  | 6d → 6.74d |
| 13 | **Irrigation Controllers** | 2027-05-05 → 2027-05-04 (-1d) |  |  |
| 1 | **Pre install** | 2027-05-05 → 2027-05-04 (-1d) | 2027-06-05 → 2027-06-03 (-2d) |  |
| SDR-2-CON-IR-ZA-2070 | Pre Install of Irrigation controllers | 2027-05-05 → 2027-05-04 (-1d) | 2027-06-05 → 2027-06-03 (-2d) | 12.7d → 13.44d |
| 2 | **install** | 2027-05-23 → 2027-05-22 (-1d) | 2027-06-09 → 2027-06-08 (-1d) |  |
| SDR-2-CON-IR-ZA-2760 | Install Irrigation controllers | 2027-05-23 → 2027-05-22 (-1d) | 2027-06-09 → 2027-06-08 (-1d) | 12.7d → 13.44d |
| 3 | **Finishing** | 2027-06-09 → 2027-06-08 (-1d) | 2027-06-19 → 2027-06-17 (-2d) |  |
| SDR-2-CON-IR-ZA-2770 | Finishing of Irrigation controllers | 2027-06-09 → 2027-06-08 (-1d) | 2027-06-19 → 2027-06-17 (-2d) | 12.7d → 13.44d |
| 4 | **Repairs** | 2027-06-27 → 2027-06-26 (-1d) |  |  |
| SDR-2-CON-IR-ZA-2780 | Repairs of Irrigation controllers | 2027-06-27 → 2027-06-26 (-1d) |  | 6d → 6.74d |
| 14 | **Decoder Cable & Conduit Works** | 2027-05-05 → 2027-05-04 (-1d) | 2027-06-29 → 2027-06-28 (-1d) |  |
| 1 | **Pre install** | 2027-05-05 → 2027-05-04 (-1d) | 2027-06-05 → 2027-06-03 (-2d) |  |
| SDR-2-CON-IR-ZA-2080 | Pre Install of Decoder Cable & Conduits Works | 2027-05-05 → 2027-05-04 (-1d) | 2027-06-05 → 2027-06-03 (-2d) | 4.7d → 5.44d |
| 2 | **install** | 2027-06-05 → 2027-06-03 (-2d) | 2027-06-22 → 2027-06-21 (-1d) |  |
| SDR-2-CON-IR-ZA-2090 | Install of Decoder Cable & Conduits Works | 2027-06-05 → 2027-06-03 (-2d) | 2027-06-22 → 2027-06-21 (-1d) | 4.7d → 5.44d |
| 3 | **Finishing** | 2027-06-22 → 2027-06-21 (-1d) | 2027-06-28 → 2027-06-27 (-1d) |  |
| SDR-2-CON-IR-ZA-2790 | Finishing of Decoder Cable & Conduits Works | 2027-06-22 → 2027-06-21 (-1d) | 2027-06-28 → 2027-06-27 (-1d) | 4.7d → 5.44d |
| 4 | **Repairs** | 2027-06-28 → 2027-06-27 (-1d) | 2027-06-29 → 2027-06-28 (-1d) |  |
| SDR-2-CON-IR-ZA-2800 | Repair of Decoder Cable & Conduits Works | 2027-06-28 → 2027-06-27 (-1d) | 2027-06-29 → 2027-06-28 (-1d) | 4.7d → 5.44d |
| 15 | **Solar Power System Installation** | 2027-05-05 → 2027-05-04 (-1d) | 2027-06-30 → 2027-06-29 (-1d) |  |
| 1 | **Pre install** | 2027-05-05 → 2027-05-04 (-1d) | 2027-06-05 → 2027-06-03 (-2d) |  |
| SDR-2-CON-IR-ZA-2100 | Pre Install of Solar Power System Installation | 2027-05-05 → 2027-05-04 (-1d) | 2027-06-05 → 2027-06-03 (-2d) | 4.7d → 5.44d |
| 2 | **install** | 2027-06-05 → 2027-06-03 (-2d) | 2027-06-22 → 2027-06-21 (-1d) |  |
| SDR-2-CON-IR-ZA-2810 | Install of Pre Install of Solar Power System Installation | 2027-06-05 → 2027-06-03 (-2d) | 2027-06-22 → 2027-06-21 (-1d) | 4.7d → 5.44d |
| 3 | **Finishing** | 2027-06-22 → 2027-06-21 (-1d) | 2027-06-29 → 2027-06-28 (-1d) |  |
| SDR-2-CON-IR-ZA-2820 | Finishing of Pre Install of Solar Power System Installation | 2027-06-22 → 2027-06-21 (-1d) | 2027-06-29 → 2027-06-28 (-1d) | 4.7d → 5.44d |
| 4 | **Repairs** | 2027-06-29 → 2027-06-28 (-1d) | 2027-06-30 → 2027-06-29 (-1d) |  |
| SDR-2-CON-IR-ZA-2830 | Repair of Solar Power System Installation | 2027-06-29 → 2027-06-28 (-1d) | 2027-06-30 → 2027-06-29 (-1d) | 4.7d → 5.44d |
| 16 | **System Integration & Programming** | 2027-05-05 → 2027-05-04 (-1d) | 2027-06-30 → 2027-06-29 (-1d) |  |
| 1 | **Pre install** | 2027-05-05 → 2027-05-04 (-1d) | 2027-06-05 → 2027-06-03 (-2d) |  |
| SDR-2-CON-IR-ZA-2110 | Pre Install of System Integration & Programming | 2027-05-05 → 2027-05-04 (-1d) | 2027-06-05 → 2027-06-03 (-2d) | 12.7d → 13.44d |
| 2 | **install** | 2027-05-23 → 2027-05-22 (-1d) | 2027-06-09 → 2027-06-08 (-1d) |  |
| SDR-2-CON-IR-ZA-2840 | Install of System Integration & Programming | 2027-05-23 → 2027-05-22 (-1d) | 2027-06-09 → 2027-06-08 (-1d) | 12.7d → 13.44d |
| 3 | **Finishing** | 2027-06-09 → 2027-06-08 (-1d) | 2027-06-19 → 2027-06-17 (-2d) |  |
| SDR-2-CON-IR-ZA-2850 | Finishing of System Integration & Programming | 2027-06-09 → 2027-06-08 (-1d) | 2027-06-19 → 2027-06-17 (-2d) | 12.7d → 13.44d |
| 4 | **Repairs** | 2027-06-29 → 2027-06-28 (-1d) | 2027-06-30 → 2027-06-29 (-1d) |  |
| SDR-2-CON-IR-ZA-2860 | Repair of System Integration & Programming | 2027-06-29 → 2027-06-28 (-1d) | 2027-06-30 → 2027-06-29 (-1d) | 4.7d → 5.44d |
| 1 | **Landscape Works** |  | 2027-06-30 → 2027-06-29 (-1d) |  |
| 1 | **GROUND COVER** |  | 2027-06-05 → 2027-06-03 (-2d) |  |
| SDR-2-CON-LS-ZA-1000 | Clearing & grubbing of landscape areas |  | 2027-05-29 → 2027-05-27 (-2d) | 1.7d → 2d |
| SDR-2-CON-LS-ZA-1010 | Grass laying |  | 2027-06-05 → 2027-06-03 (-2d) | 9.7d → 10d |
| 2 | **Trees** |  | 2027-06-24 → 2027-06-23 (-1d) |  |
| SDR-2-CON-LS-ZA-1020 | Albizia lebbeck tress planting. |  | 2027-06-21 → 2027-06-20 (-1d) | 9.7d → 10d |
| SDR-2-CON-LS-ZA-1030 | Tabopia tress planting. |  | 2027-06-21 → 2027-06-20 (-1d) | 9.7d → 10d |
| SDR-2-CON-LS-ZA-1040 | Plumeria alba tress planting. |  | 2027-06-24 → 2027-06-23 (-1d) | 9.7d → 10d |
| SDR-2-CON-LS-ZA-1050 | Cassia glauca tress planting. |  | 2027-06-24 → 2027-06-23 (-1d) | 9.7d → 10d |
| 3 | **Miscellaneous landscaping items** | 2027-06-15 → 2027-06-14 (-1d) | 2027-06-30 → 2027-06-29 (-1d) |  |
| SDR-2-CON-LS-ZA-1060 | Gravel/Stone mulch: 75mm thick Hard, durable stone, washed free of loam, sand, clay, | 2027-06-15 → 2027-06-14 (-1d) | 2027-06-30 → 2027-06-29 (-1d) | 4.7d → 5.44d |
| ZG | **ZONE G** | 2027-05-05 → 2027-05-04 (-1d) |  |  |
| 2 | **Irrigation Works** | 2027-05-05 → 2027-05-04 (-1d) |  |  |
| 11 | **IRRIGATION WORKS IN ( PH2-G-MCE0 )** | 2027-05-08 → 2027-05-06 (-2d) |  |  |
| 7 | **Pre install** | 2027-05-08 → 2027-05-06 (-2d) |  |  |

| ID | Task | Start | Finish | Total float |
| --- | --- | --- | --- | --- |
| SDR-2-CON-IR-ZA-2560 | Pre Install for irrigation Works | 2027-05-08 → 2027-05-06 (-2d) |  | 0d → 0.74d |
| 8 | **install** | 2027-06-06 → 2027-06-05 (-1d) |  |  |
| SDR-2-CON-IR-ZA-2570 | Installation of HDPE Pipe | 2027-06-06 → 2027-06-05 (-1d) |  | 0d → 0.74d |
| 9 | **Finishing** | 2027-06-21 → 2027-06-20 (-1d) |  |  |
| SDR-2-CON-IR-ZA-2580 | Finishing Works for irrigation | 2027-06-21 → 2027-06-20 (-1d) |  | 0d → 0.74d |
| 10 | **Repairs** | 2027-07-03 → 2027-07-01 (-2d) |  |  |
| SDR-2-CON-IR-ZA-2590 | Repair for irrigation Works | 2027-07-03 → 2027-07-01 (-2d) |  | 0d → 0.74d |
| 5 | **IRRIGATION WORKS IN ( PH2-G-MCZ0 )** | 2027-05-08 → 2027-05-06 (-2d) |  |  |
| 7 | **Pre install** | 2027-05-08 → 2027-05-06 (-2d) |  |  |
| SDR-2-CON-IR-ZA-2600 | Pre Install for irrigation Works | 2027-05-08 → 2027-05-06 (-2d) |  | 0d → 0.74d |
| 8 | **install** | 2027-06-06 → 2027-06-05 (-1d) |  |  |
| SDR-2-CON-IR-ZA-2610 | Installation of HDPE Pipe | 2027-06-06 → 2027-06-05 (-1d) |  | 0d → 0.74d |
| 9 | **Finishing** | 2027-06-21 → 2027-06-20 (-1d) |  |  |
| SDR-2-CON-IR-ZA-2620 | Finishing Works for irrigation | 2027-06-21 → 2027-06-20 (-1d) |  | 0d → 0.74d |
| 10 | **Repairs** | 2027-07-03 → 2027-07-01 (-2d) |  |  |
| SDR-2-CON-IR-ZA-2630 | Repair for irrigation Works | 2027-07-03 → 2027-07-01 (-2d) |  | 0d → 0.74d |
| 1 | **IRRIGATION WORKS IN ( PH2-G-MCA0 )** | 2027-05-08 → 2027-05-06 (-2d) |  |  |
| 7 | **Pre install** | 2027-05-08 → 2027-05-06 (-2d) |  |  |
| SDR-2-CON-IR-ZA-2640 | Pre Install for irrigation Works | 2027-05-08 → 2027-05-06 (-2d) |  | 0d → 0.74d |
| 8 | **install** | 2027-06-05 → 2027-06-03 (-2d) |  |  |
| SDR-2-CON-IR-ZA-2650 | Installation of HDPE Pipe | 2027-06-05 → 2027-06-03 (-2d) |  | 0d → 0.74d |
| 9 | **Finishing** | 2027-06-20 → 2027-06-19 (-1d) |  |  |
| SDR-2-CON-IR-ZA-2660 | Finishing Works for irrigation | 2027-06-20 → 2027-06-19 (-1d) |  | 0d → 0.74d |
| 10 | **Repairs** | 2027-07-04 → 2027-07-03 (-1d) |  |  |
| SDR-2-CON-IR-ZA-2670 | Repair for irrigation Works | 2027-07-04 → 2027-07-03 (-1d) |  | 0d → 0.74d |
| 2 | **IRRIGATION WORKS IN ( PH2-G-MCF0 )** | 2027-05-08 → 2027-05-06 (-2d) |  |  |
| 7 | **Pre install** | 2027-05-08 → 2027-05-06 (-2d) |  |  |
| SDR-2-CON-IR-ZA-2680 | Pre Install for irrigation Works | 2027-05-08 → 2027-05-06 (-2d) |  | 0d → 0.74d |
| 8 | **install** | 2027-06-06 → 2027-06-05 (-1d) |  |  |
| SDR-2-CON-IR-ZA-2690 | Installation of HDPE Pipe | 2027-06-06 → 2027-06-05 (-1d) |  | 0d → 0.74d |
| 9 | **Finishing** | 2027-06-21 → 2027-06-20 (-1d) |  |  |
| SDR-2-CON-IR-ZA-2700 | Finishing Works for irrigation | 2027-06-21 → 2027-06-20 (-1d) |  | 0d → 0.74d |
| 10 | **Repairs** | 2027-07-04 → 2027-07-03 (-1d) |  |  |
| SDR-2-CON-IR-ZA-2710 | Repair for irrigation Works | 2027-07-04 → 2027-07-03 (-1d) |  | 0d → 0.74d |
| 3 | **IRRIGATION WORKS IN ( PH2-G-MCG0 )** | 2027-05-08 → 2027-05-06 (-2d) |  |  |
| 7 | **Pre install** | 2027-05-08 → 2027-05-06 (-2d) |  |  |
| SDR-2-CON-IR-ZA-2720 | Pre Install for irrigation Works | 2027-05-08 → 2027-05-06 (-2d) |  | 0d → 0.74d |
| 8 | **install** | 2027-06-05 → 2027-06-03 (-2d) |  |  |
| SDR-2-CON-IR-ZA-2730 | Installation of HDPE Pipe | 2027-06-05 → 2027-06-03 (-2d) |  | 0d → 0.74d |
| 9 | **Finishing** | 2027-06-20 → 2027-06-19 (-1d) |  |  |
| SDR-2-CON-IR-ZA-2740 | Finishing Works for irrigation | 2027-06-20 → 2027-06-19 (-1d) |  | 0d → 0.74d |
| 10 | **Repairs** | 2027-07-04 → 2027-07-03 (-1d) |  |  |
| SDR-2-CON-IR-ZA-2750 | Repair for irrigation Works | 2027-07-04 → 2027-07-03 (-1d) |  | 0d → 0.74d |
| 13 | **Irrigation Controllers** | 2027-05-05 → 2027-05-04 (-1d) |  |  |
| 1 | **Pre install** | 2027-05-05 → 2027-05-04 (-1d) | 2027-06-05 → 2027-06-03 (-2d) |  |
| SDR-2-CON-IR-ZA-2870 | Pre Install of Irrigation controllers | 2027-05-05 → 2027-05-04 (-1d) | 2027-06-05 → 2027-06-03 (-2d) | 1.7d → 2.44d |
| 2 | **install** | 2027-06-05 → 2027-06-03 (-2d) | 2027-06-22 → 2027-06-21 (-1d) |  |
| SDR-2-CON-IR-ZA-2880 | Install Irrigation controllers | 2027-06-05 → 2027-06-03 (-2d) | 2027-06-22 → 2027-06-21 (-1d) | 1.7d → 2.44d |
| 3 | **Finishing** | 2027-06-22 → 2027-06-21 (-1d) | 2027-07-01 → 2027-06-30 (-1d) |  |
| SDR-2-CON-IR-ZA-2890 | Finishing of Irrigation controllers | 2027-06-22 → 2027-06-21 (-1d) | 2027-07-01 → 2027-06-30 (-1d) | 1.7d → 2.44d |
| 4 | **Repairs** | 2027-07-04 → 2027-07-03 (-1d) |  |  |
| SDR-2-CON-IR-ZA-2900 | Repairs of Irrigation controllers | 2027-07-04 → 2027-07-03 (-1d) |  | 0d → 0.74d |
| 14 | **Decoder Cable & Conduit Works** | 2027-05-05 → 2027-05-04 (-1d) |  |  |
| 1 | **Pre install** | 2027-05-05 → 2027-05-04 (-1d) | 2027-06-05 → 2027-06-03 (-2d) |  |
| SDR-2-CON-IR-ZA-2910 | Pre Install of Decoder Cable & Conduits Works | 2027-05-05 → 2027-05-04 (-1d) | 2027-06-05 → 2027-06-03 (-2d) | 1.7d → 2.44d |
| 2 | **install** | 2027-06-05 → 2027-06-03 (-2d) | 2027-06-22 → 2027-06-21 (-1d) |  |
| SDR-2-CON-IR-ZA-2920 | Install of Decoder Cable & Conduits Works | 2027-06-05 → 2027-06-03 (-2d) | 2027-06-22 → 2027-06-21 (-1d) | 1.7d → 2.44d |
| 3 | **Finishing** | 2027-06-22 → 2027-06-21 (-1d) | 2027-07-03 → 2027-07-01 (-2d) |  |
| SDR-2-CON-IR-ZA-2930 | Finishing of Decoder Cable & Conduits Works | 2027-06-22 → 2027-06-21 (-1d) | 2027-07-03 → 2027-07-01 (-2d) | 1.7d → 2.44d |
| 4 | **Repairs** | 2027-07-05 → 2027-07-04 (-1d) |  |  |
| SDR-2-CON-IR-ZA-2940 | Repair of Decoder Cable & Conduits Works | 2027-07-05 → 2027-07-04 (-1d) |  | 0d → 0.74d |
| 15 | **Solar Power System Installation** | 2027-05-05 → 2027-05-04 (-1d) | 2027-07-04 → 2027-07-03 (-1d) |  |
| 1 | **Pre install** | 2027-05-05 → 2027-05-04 (-1d) | 2027-06-05 → 2027-06-03 (-2d) |  |
| SDR-2-CON-IR-ZA-2950 | Pre Install of Solar Power System Installation | 2027-05-05 → 2027-05-04 (-1d) | 2027-06-05 → 2027-06-03 (-2d) | 1.7d → 2.44d |
| 2 | **install** | 2027-06-05 → 2027-06-03 (-2d) | 2027-06-22 → 2027-06-21 (-1d) |  |
| SDR-2-CON-IR-ZA-2960 | Install of Pre Install of Solar Power System Installation | 2027-06-05 → 2027-06-03 (-2d) | 2027-06-22 → 2027-06-21 (-1d) | 1.7d → 2.44d |
| 3 | **Finishing** | 2027-06-22 → 2027-06-21 (-1d) | 2027-06-30 → 2027-06-29 (-1d) |  |
| SDR-2-CON-IR-ZA-2970 | Finishing of Pre Install of Solar Power System Installation | 2027-06-22 → 2027-06-21 (-1d) | 2027-06-30 → 2027-06-29 (-1d) | 1.7d → 2.44d |
| 4 | **Repairs** | 2027-06-30 → 2027-06-29 (-1d) | 2027-07-04 → 2027-07-03 (-1d) |  |
| SDR-2-CON-IR-ZA-2980 | Repair of Solar Power System Installation | 2027-06-30 → 2027-06-29 (-1d) | 2027-07-04 → 2027-07-03 (-1d) | 1.7d → 2.44d |

| ID | Task | Start | Finish | Total float |
| --- | --- | --- | --- | --- |
| 1 | **Landscape Works** |  | 2027-07-04 → 2027-07-03 (-1d) |  |
| 1 | **GROUND COVER** |  | 2027-06-13 → 2027-06-12 (-1d) |  |
| SDR-2-CON-LS-ZG-1000 | Clearing & grubbing of landscape areas |  | 2027-05-29 → 2027-05-27 (-2d) | 1.7d → 2d |
| SDR-2-CON-LS-ZG-1010 | Grass laying |  | 2027-06-13 → 2027-06-12 (-1d) | 1.7d → 2d |
| 2 | **Trees** |  | 2027-07-04 → 2027-07-03 (-1d) |  |
| SDR-2-CON-LS-ZG-1020 | Albizia lebbeck tress planting. |  | 2027-07-04 → 2027-07-03 (-1d) | 1.7d → 2d |
| SDR-2-CON-LS-ZG-1030 | Tabopia tress planting. |  | 2027-07-04 → 2027-07-03 (-1d) | 1.7d → 2d |
| SDR-2-CON-LS-ZG-1040 | Plumeria alba tress planting. |  | 2027-07-04 → 2027-07-03 (-1d) | 1.7d → 2d |
| SDR-2-CON-LS-ZG-1050 | Cassia glauca tress planting. |  | 2027-07-04 → 2027-07-03 (-1d) | 1.7d → 2d |
| 3 | **Miscellaneous landscaping items** |  | 2027-07-04 → 2027-07-03 (-1d) |  |
| SDR-2-CON-LS-ZG-1060 | Gravel/Stone mulch: 75mm thick Hard, durable stone, washed free of loam, sand, clay, |  | 2027-07-04 → 2027-07-03 (-1d) | 1.7d → 2d |
| CC | **CCTV Works** |  | 2027-04-13 → 2027-04-20 (+7d) |  |
| ZA | **ZONE A** |  | 2027-04-13 → 2027-04-20 (+7d) |  |
| 1 | **Poles 1st and 2nd Fix Works** |  | 2026-12-26 → 2027-01-02 (+7d) |  |
| 1 | **Excavation** |  | 2026-12-08 → 2026-12-15 (+7d) |  |
| SDR-2-CON-CC-ZA-1000 | Excavation 1Sst & 2nd Fix Works |  | 2026-12-08 → 2026-12-15 (+7d) | 17d → 11d |
| 2 | **Install Footings** |  | 2026-12-08 → 2026-12-15 (+7d) |  |
| SDR-2-CON-CC-ZA-1030 | Install Footings |  | 2026-12-08 → 2026-12-15 (+7d) | 17d → 11d |
| 3 | **Backfilling** | 2026-12-09 → 2026-12-16 (+7d) | 2026-12-16 → 2026-12-23 (+7d) |  |
| SDR-2-CON-CC-ZA-1050 | Backfilling 1Sst & 2nd Fix Works | 2026-12-09 → 2026-12-16 (+7d) | 2026-12-16 → 2026-12-23 (+7d) | 17d → 11d |
| 4 | **Install pole** | 2026-12-17 → 2026-12-24 (+7d) | 2026-12-26 → 2027-01-02 (+7d) |  |
| SDR-2-CON-CC-ZA-1060 | Install Pole | 2026-12-17 → 2026-12-24 (+7d) | 2026-12-26 → 2027-01-02 (+7d) | 17d → 11d |
| 2 | **25m Pole Package** |  | 2027-04-13 → 2027-04-20 (+7d) |  |
| 1 | **Excavation** |  | 2026-12-26 → 2027-01-02 (+7d) |  |
| SDR-2-CON-CC-ZA-1080 | 25 Meters Pole Excavation |  | 2026-12-26 → 2027-01-02 (+7d) | 17d → 11d |
| 2 | **Install Footings** |  | 2026-12-26 → 2027-01-02 (+7d) |  |
| SDR-2-CON-CC-ZA-1090 | 25 Meters pole installation Footings |  | 2026-12-26 → 2027-01-02 (+7d) | 46d → 40d |
| 3 | **Backfilling** | 2027-02-18 → 2027-02-27 (+9d) | 2027-03-20 → 2027-03-27 (+7d) |  |
| SDR-2-CON-CC-ZA-1100 | 25 Meters pole Backfilling | 2027-02-18 → 2027-02-27 (+9d) | 2027-03-20 → 2027-03-27 (+7d) | 8d → 2d |
| 4 | **Install pole** | 2027-03-21 → 2027-03-28 (+7d) | 2027-04-13 → 2027-04-20 (+7d) |  |
| SDR-2-CON-CC-ZA-1110 | 25 Meters pole installation | 2027-03-21 → 2027-03-28 (+7d) | 2027-04-13 → 2027-04-20 (+7d) | 8d → 2d |
| 3 | **7m Pole Package** |  | 2027-02-23 → 2027-03-02 (+7d) |  |
| 1 | **Excavation** |  | 2026-12-26 → 2027-01-02 (+7d) |  |
| SDR-2-CON-CC-ZA-1240 | 7m Meters Pole Excavation |  | 2026-12-26 → 2027-01-02 (+7d) | 17d → 11d |
| 2 | **Install Footings** |  | 2026-12-26 → 2027-01-02 (+7d) |  |
| SDR-2-CON-CC-ZA-1250 | 7m Meters pole installation Footings |  | 2026-12-26 → 2027-01-02 (+7d) | 46d → 40d |
| 3 | **Backfilling** | 2027-01-04 → 2027-01-11 (+7d) | 2027-01-27 → 2027-02-03 (+7d) |  |
| SDR-2-CON-CC-ZA-1260 | 7m Meters pole Backfilling | 2027-01-04 → 2027-01-11 (+7d) | 2027-01-27 → 2027-02-03 (+7d) | 46d → 40d |
| 4 | **Install pole** | 2027-01-30 → 2027-02-06 (+7d) | 2027-02-23 → 2027-03-02 (+7d) |  |
| SDR-2-CON-CC-ZA-1270 | 7 Meters pole Installation | 2027-01-30 → 2027-02-06 (+7d) | 2027-02-23 → 2027-03-02 (+7d) | 46d → 40d |
| 4 | **35m Pole Package** |  | 2027-04-13 → 2027-04-20 (+7d) |  |
| 1 | **Excavation** |  | 2026-12-26 → 2027-01-02 (+7d) |  |
| SDR-2-CON-CC-ZA-1380 | 35m Meters Pole Excavation |  | 2026-12-26 → 2027-01-02 (+7d) | 17d → 11d |
| 2 | **Install Footings** |  | 2026-12-27 → 2027-01-03 (+7d) |  |
| SDR-2-CON-CC-ZA-1390 | 35m Meters pole installation Footings |  | 2026-12-27 → 2027-01-03 (+7d) | 59d → 53d |
| 3 | **Backfilling** | 2027-02-25 → 2027-03-04 (+7d) | 2027-03-21 → 2027-03-28 (+7d) |  |
| SDR-2-CON-CC-ZA-1400 | 35m Meters pole Backfilling | 2027-02-25 → 2027-03-04 (+7d) | 2027-03-21 → 2027-03-28 (+7d) | 8d → 2d |
| 4 | **Install pole** | 2027-03-22 → 2027-03-29 (+7d) | 2027-04-13 → 2027-04-20 (+7d) |  |
| SDR-2-CON-CC-ZA-1410 | 35 Meters pole Installation | 2027-03-22 → 2027-03-29 (+7d) | 2027-04-13 → 2027-04-20 (+7d) | 8d → 2d |
| 5 | **Control Room** | 2027-01-13 → 2027-01-20 (+7d) | 2027-02-04 → 2027-02-11 (+7d) |  |
| SDR-2-CON-CC-ZA-1500 | Existing Control Room Preparation to accomodate the new equipment | 2027-01-13 → 2027-01-20 (+7d) | 2027-01-19 → 2027-01-26 (+7d) | 17d → 11d |
| SDR-2-CON-CC-ZA-1510 | VMS Server | 2027-01-13 → 2027-01-20 (+7d) | 2027-01-17 → 2027-01-24 (+7d) | 17d → 11d |
| SDR-2-CON-CC-ZA-1520 | Surveillance-optimized server for recording CCTV support simultaneous cameras stream and recording at high resolution | 2027-01-14 → 2027-01-21 (+7d) | 2027-01-18 → 2027-01-25 (+7d) | 17d → 11d |
| SDR-2-CON-CC-ZA-1530 | Video analytic computing hardware | 2027-01-16 → 2027-01-23 (+7d) | 2027-01-19 → 2027-01-26 (+7d) | 17d → 11d |
| SDR-2-CON-CC-ZA-1540 | Workstation | 2027-01-17 → 2027-01-24 (+7d) | 2027-01-25 → 2027-02-01 (+7d) | 17d → 11d |
| SDR-2-CON-CC-ZA-1550 | Professional LED screen 32 inch for workstations | 2027-01-18 → 2027-01-25 (+7d) | 2027-01-21 → 2027-01-28 (+7d) | 17d → 11d |
| SDR-2-CON-CC-ZA-1560 | Professional 55" video wall cube | 2027-01-20 → 2027-01-27 (+7d) | 2027-01-24 → 2027-01-31 (+7d) | 17d → 11d |
| SDR-2-CON-CC-ZA-1570 | Industrial Rack-Mount Managed Modular Gigabit Ethernet PoE Switch (24-Port) for outdoor application | 2027-01-26 → 2027-02-02 (+7d) | 2027-02-03 → 2027-02-10 (+7d) | 17d → 11d |
| SDR-2-CON-CC-ZA-1580 | SFP 1000Base-X SM | 2027-01-26 → 2027-02-02 (+7d) | 2027-02-02 → 2027-02-09 (+7d) | 17d → 11d |
| SDR-2-CON-CC-ZA-1590 | Professional joystick for accurate control of PTZ and PT Thermal Cameras. | 2027-01-27 → 2027-02-03 (+7d) | 2027-01-31 → 2027-02-07 (+7d) | 17d → 11d |
| SDR-2-CON-CC-ZA-1600 | Fiber patch panel including all related accessories | 2027-01-28 → 2027-02-04 (+7d) | 2027-02-04 → 2027-02-11 (+7d) | 17d → 11d |
| SDR-2-CON-CC-ZA-1610 | UPS 5000VA to power for all servers, monitor, and switch in the cabinet | 2027-01-28 → 2027-02-04 (+7d) | 2027-02-01 → 2027-02-08 (+7d) | 17d → 11d |
| SDR-2-CON-CC-ZA-1620 | Outdoor Carrier Class Shielded Ethernet Cable for P-to-P access points 305 meter | 2027-01-28 → 2027-02-04 (+7d) | 2027-02-04 → 2027-02-11 (+7d) | 39d → 33d |
| 6 | **Licenses,Documentation,Testing and Training** | 2027-02-01 → 2027-02-08 (+7d) | 2027-02-07 → 2027-02-14 (+7d) |  |
| SDR-2-CON-CC-ZA-1630 | VMS Lifetime Licenses | 2027-02-01 → 2027-02-08 (+7d) | 2027-02-07 → 2027-02-14 (+7d) | 61d → 55d |
| SDR-2-CON-CC-ZA-1640 | Camera-Interlink License | 2027-02-01 → 2027-02-08 (+7d) | 2027-02-07 → 2027-02-14 (+7d) | 61d → 55d |
| SDR-2-CON-CC-ZA-1650 | Video analytics license package | 2027-02-01 → 2027-02-08 (+7d) | 2027-02-04 → 2027-02-11 (+7d) | 61d → 55d |
| SDR-2-CON-CC-ZA-1660 | Video analytics license for ANPR | 2027-02-01 → 2027-02-08 (+7d) | 2027-02-04 → 2027-02-11 (+7d) | 61d → 55d |
| ZG | **ZONE G** |  | 2027-04-13 → 2027-04-20 (+7d) |  |
| 1 | **Poles 1st and 2nd Fix Works** |  | 2026-10-22 → 2026-10-29 (+7d) |  |

| ID | Task | Start | Finish | Total float |
| --- | --- | --- | --- | --- |
| 1 | **Excavation** |  | 2026-10-05 → 2026-10-12 (+7d) |  |
| SDR-2-CON-CC-ZA-1670 | Excavation 1Sst & 2nd Fix Works |  | 2026-10-05 → 2026-10-12 (+7d) | 25d → 19d |
| 2 | **Install Footings** |  | 2026-10-05 → 2026-10-12 (+7d) |  |
| SDR-2-CON-CC-ZA-1700 | Install Footings |  | 2026-10-05 → 2026-10-12 (+7d) | 25d → 19d |
| 3 | **Backfilling** | 2026-10-06 → 2026-10-13 (+7d) | 2026-10-13 → 2026-10-20 (+7d) |  |
| SDR-2-CON-CC-ZA-1720 | Backfilling 1Sst & 2nd Fix Works | 2026-10-06 → 2026-10-13 (+7d) | 2026-10-13 → 2026-10-20 (+7d) | 25d → 19d |
| 4 | **Install pole** | 2026-10-14 → 2026-10-21 (+7d) | 2026-10-22 → 2026-10-29 (+7d) |  |
| SDR-2-CON-CC-ZA-1730 | Install Pole | 2026-10-14 → 2026-10-21 (+7d) | 2026-10-22 → 2026-10-29 (+7d) | 25d → 19d |
| 2 | **25m Pole Package** |  | 2027-01-14 → 2027-01-21 (+7d) |  |
| 1 | **Excavation** |  | 2026-10-22 → 2026-10-29 (+7d) |  |
| SDR-2-CON-CC-ZA-1750 | 25 Meters Pole Excavation |  | 2026-10-22 → 2026-10-29 (+7d) | 25d → 19d |
| 2 | **Install Footings** | 2026-10-24 → 2026-10-31 (+7d) | 2026-11-16 → 2026-11-23 (+7d) |  |
| SDR-2-CON-CC-ZA-1760 | 25 Meters pole installation Footings | 2026-10-24 → 2026-10-31 (+7d) | 2026-11-16 → 2026-11-23 (+7d) | 25d → 19d |
| 3 | **Backfilling** | 2026-11-17 → 2026-11-24 (+7d) | 2026-12-09 → 2026-12-16 (+7d) |  |
| SDR-2-CON-CC-ZA-1770 | 25 Meters pole Backfilling | 2026-11-17 → 2026-11-24 (+7d) | 2026-12-09 → 2026-12-16 (+7d) | 25d → 19d |
| 4 | **Install pole** | 2026-12-22 → 2026-12-29 (+7d) | 2027-01-14 → 2027-01-21 (+7d) |  |
| SDR-2-CON-CC-ZA-1780 | 25 Meters pole installation | 2026-12-22 → 2026-12-29 (+7d) | 2027-01-14 → 2027-01-21 (+7d) | 25d → 19d |
| 3 | **7m Pole Package** |  | 2027-02-25 → 2027-03-04 (+7d) |  |
| 1 | **Excavation** |  | 2026-10-22 → 2026-10-29 (+7d) |  |
| SDR-2-CON-CC-ZA-1790 | 7m Meters Pole Excavation |  | 2026-10-22 → 2026-10-29 (+7d) | 29d → 23d |
| 2 | **Install Footings** | 2026-10-24 → 2026-10-31 (+7d) | 2026-11-15 → 2026-11-22 (+7d) |  |
| SDR-2-CON-CC-ZA-1800 | 7m Meters pole installation Footings | 2026-10-24 → 2026-10-31 (+7d) | 2026-11-15 → 2026-11-22 (+7d) | 57d → 51d |
| 3 | **Backfilling** | 2026-11-16 → 2026-11-23 (+7d) | 2026-12-08 → 2026-12-15 (+7d) |  |
| SDR-2-CON-CC-ZA-1810 | 7m Meters pole Backfilling | 2026-11-16 → 2026-11-23 (+7d) | 2026-12-08 → 2026-12-15 (+7d) | 57d → 51d |
| 4 | **Install pole** | 2027-02-01 → 2027-02-08 (+7d) | 2027-02-25 → 2027-03-04 (+7d) |  |
| SDR-2-CON-CC-ZA-1820 | 7 Meters pole Installation | 2027-02-01 → 2027-02-08 (+7d) | 2027-02-25 → 2027-03-04 (+7d) | 22d → 16d |
| 4 | **35m Pole Package** |  | 2026-12-21 → 2026-12-28 (+7d) |  |
| 1 | **Excavation** |  | 2026-10-22 → 2026-10-29 (+7d) |  |
| SDR-2-CON-CC-ZA-1830 | 35m Meters Pole Excavation |  | 2026-10-22 → 2026-10-29 (+7d) | 46d → 40d |
| 2 | **Install Footings** | 2026-10-24 → 2026-10-31 (+7d) | 2026-11-15 → 2026-11-22 (+7d) |  |
| SDR-2-CON-CC-ZA-1840 | 35m Meters pole installation Footings | 2026-10-24 → 2026-10-31 (+7d) | 2026-11-15 → 2026-11-22 (+7d) | 46d → 40d |
| 3 | **Backfilling** | 2026-10-27 → 2026-11-03 (+7d) | 2026-11-18 → 2026-11-25 (+7d) |  |
| SDR-2-CON-CC-ZA-1850 | 35m Meters pole Backfilling | 2026-10-27 → 2026-11-03 (+7d) | 2026-11-18 → 2026-11-25 (+7d) | 46d → 40d |
| 4 | **Install pole** | 2026-11-30 → 2026-12-07 (+7d) | 2026-12-21 → 2026-12-28 (+7d) |  |
| SDR-2-CON-CC-ZA-1860 | 35 Meters pole Installation | 2026-11-30 → 2026-12-07 (+7d) | 2026-12-21 → 2026-12-28 (+7d) | 46d → 40d |
| 5 | **Control Room** | 2026-10-24 → 2026-10-31 (+7d) | 2026-12-21 → 2026-12-28 (+7d) |  |
| SDR-2-CON-CC-ZG-1500 | Existing Control Room Preparation to accomodate the new equipments | 2026-10-24 → 2026-10-31 (+7d) | 2026-10-27 → 2026-11-03 (+7d) | 30d → 24d |
| SDR-2-CON-CC-ZG-1540 | Workstation | 2026-10-24 → 2026-10-31 (+7d) | 2026-11-05 → 2026-11-12 (+7d) | 29d → 23d |
| SDR-2-CON-CC-ZG-1550 | Professional LED screen 32 inch for workstations | 2026-10-24 → 2026-10-31 (+7d) | 2026-10-27 → 2026-11-03 (+7d) | 29d → 23d |
| SDR-2-CON-CC-ZG-1510 | VMS Server | 2026-10-28 → 2026-11-04 (+7d) | 2026-11-02 → 2026-11-09 (+7d) | 30d → 24d |
| SDR-2-CON-CC-ZG-1560 | Professional 55" video wall cube | 2026-10-28 → 2026-11-04 (+7d) | 2026-11-01 → 2026-11-08 (+7d) | 29d → 23d |
| SDR-2-CON-CC-ZG-1570 | Industrial Rack-Mount Managed Modular Gigabit Ethernet PoE Switch (24-Port) for outdoor application | 2026-10-31 → 2026-11-07 (+7d) | 2026-11-09 → 2026-11-16 (+7d) | 29d → 23d |
| SDR-2-CON-CC-ZG-1580 | SFP 1000Base-X SM | 2026-10-31 → 2026-11-07 (+7d) | 2026-11-03 → 2026-11-10 (+7d) | 29d → 23d |
| SDR-2-CON-CC-ZG-1520 | Surveillance-optimized server for recording CCTV support simultaneous cameras stream and recording at high resolution | 2026-11-03 → 2026-11-10 (+7d) | 2026-11-07 → 2026-11-14 (+7d) | 30d → 24d |
| SDR-2-CON-CC-ZG-1590 | Professional joystick for accurate control of PTZ and PT Thermal Cameras. | 2026-11-04 → 2026-11-11 (+7d) | 2026-11-08 → 2026-11-15 (+7d) | 29d → 23d |
| SDR-2-CON-CC-ZG-1530 | Video analytic computing hardware | 2026-11-08 → 2026-11-15 (+7d) | 2026-11-11 → 2026-11-18 (+7d) | 32d → 26d |
| SDR-2-CON-CC-ZG-1600 | Fiber patch panel including all related accessories | 2026-11-09 → 2026-11-16 (+7d) | 2026-11-12 → 2026-11-19 (+7d) | 29d → 23d |
| SDR-2-CON-CC-ZG-1610 | UPS 5000VA to power for all servers, monitor, and switch in the cabinet | 2026-11-15 → 2026-11-22 (+7d) | 2026-11-21 → 2026-11-28 (+7d) | 29d → 23d |
| SDR-2-CON-CC-ZG-1620 | Outdoor Carrier Class Shielded Ethernet Cable for P-to-P access points 305 meter | 2026-12-17 → 2026-12-24 (+7d) | 2026-12-21 → 2026-12-28 (+7d) | 46d → 40d |
| 6 | **Licenses,Documentation,Testing and Training** | 2026-11-12 → 2026-11-19 (+7d) | 2027-04-13 → 2027-04-20 (+7d) |  |
| SDR-2-CON-CC-ZG-1630 | VMS Lifetime Licenses | 2026-11-12 → 2026-11-19 (+7d) | 2026-11-14 → 2026-11-21 (+7d) | 32d → 26d |
| SDR-2-CON-CC-ZG-1640 | Camera-Interlink License | 2026-11-15 → 2026-11-22 (+7d) | 2026-11-15 → 2026-11-22 (+7d) | 32d → 26d |
| SDR-2-CON-CC-ZG-1650 | Video analytics license package | 2026-11-15 → 2026-11-22 (+7d) | 2026-11-15 → 2026-11-22 (+7d) | 32d → 26d |
| SDR-2-CON-CC-ZG-1660 | Video analytics license for ANPR | 2027-04-13 → 2027-04-20 (+7d) | 2027-04-13 → 2027-04-20 (+7d) | 8d → 2d |
| TC | **Testing & Commissioning** | 2027-01-28 → 2027-02-04 (+7d) | 2027-06-03 → 2027-06-15 (+12d) |  |
| 1 | **Civil Works** | 2027-04-17 → 2027-04-24 (+7d) | 2027-04-20 → 2027-04-27 (+7d) |  |
| SDR-2-TC-CW-1010 | Testing & Commissioning of road works | 2027-04-17 → 2027-04-24 (+7d) | 2027-04-20 → 2027-04-27 (+7d) | 15d → 9d |
| 2 | **Storm Water Drainage Network** | 2027-03-03 → 2027-02-15 (-16d) | 2027-03-22 → 2027-03-01 (-21d) |  |
| SDR-2-TC-SWDN-1020 | Testing & Commissioning of network work | 2027-03-03 → 2027-02-15 (-16d) | 2027-03-22 → 2027-03-01 (-21d) | 67.1d → 81d |
| 3 | **Sewerage Network** | 2027-05-01 → 2027-05-08 (+7d) | 2027-05-13 → 2027-05-26 (+13d) |  |
| SDR-2-TC-SN-1030 | Testing & Commissioning of Sewage Network | 2027-05-01 → 2027-05-08 (+7d) | 2027-05-13 → 2027-05-26 (+13d) | 13d → 7d |
| 4 | **TSE Network** | 2027-05-15 → 2027-06-01 (+17d) | 2027-06-03 → 2027-06-15 (+12d) |  |
| SDR-2-TC-TSE-1040 | Testing & Commissioning of TSE Network | 2027-05-15 → 2027-06-01 (+17d) | 2027-06-03 → 2027-06-15 (+12d) | 13d → 3d |
| 5 | **Portable Water** | 2027-05-22 → 2027-05-29 (+7d) | 2027-05-31 → 2027-06-07 (+7d) |  |
| SDR-2-TC-PW-1050 | Testing & Commissioning of Potable Network | 2027-05-22 → 2027-05-29 (+7d) | 2027-05-31 → 2027-06-07 (+7d) | 12d → 6d |
| 6 | **Electrical Works** | 2027-04-14 → 2027-04-21 (+7d) | 2027-04-21 → 2027-04-28 (+7d) |  |
| SDR-2-TC-EW-1060 | Testing & Commissioning of Electrical Network | 2027-04-14 → 2027-04-21 (+7d) | 2027-04-21 → 2027-04-28 (+7d) | 13d → 7d |
| 7 | **Landscape & Irrigation Works** | 2027-05-22 → 2027-06-01 (+10d) | 2027-05-27 → 2027-06-07 (+11d) |  |
| SDR-2-TC-LIW-1070 | Testing & Commissioning of Landscape & Irrigation Network | 2027-05-22 → 2027-06-01 (+10d) | 2027-05-27 → 2027-06-07 (+11d) | 33d → 24d |
| 8 | **CCTV Works** | 2027-01-28 → 2027-02-04 (+7d) | 2027-02-08 → 2027-02-15 (+7d) |  |

| ID | Task | Start | Finish | Total float |
| --- | --- | --- | --- | --- |
| SDR-2-TC-CCTV-1080 | Testing & Commissioning of medium voltage works | 2027-01-28 → 2027-02-04 (+7d) | 2027-02-08 → 2027-02-15 (+7d) | 17d → 11d |
| CO | **Close Out** | 2027-04-14 → 2027-04-21 (+7d) | 2027-07-04 → 2027-07-03 (-1d) |  |
| 1 | **As Built Drawings** | 2027-04-14 → 2027-04-21 (+7d) | 2027-06-09 → 2027-06-16 (+7d) |  |
| 1 | **Civil** | 2027-04-14 → 2027-04-21 (+7d) | 2027-04-27 → 2027-05-04 (+7d) |  |
| SDR-2-CLO-AS-C-1000 | Civil As-Built Drawing Submission | 2027-04-14 → 2027-04-21 (+7d) | 2027-04-21 → 2027-04-28 (+7d) | 8d → 2d |
| SDR-2-CLO-AS-C-1010 | Civil As-Built Drawing Approvals | 2027-04-22 → 2027-04-29 (+7d) | 2027-04-27 → 2027-05-04 (+7d) | 8d → 2d |
| 2 | **Mechanical** | 2027-05-23 → 2027-05-30 (+7d) | 2027-06-09 → 2027-06-16 (+7d) |  |
| SDR-2-CLO-AS-M-1000 | Mechanical As-Built Drawing Submission | 2027-05-23 → 2027-05-30 (+7d) | 2027-05-31 → 2027-06-07 (+7d) | 8d → 2d |
| SDR-2-CLO-AS-M-1010 | Mechanical As-Built Drawing Approvals | 2027-06-01 → 2027-06-08 (+7d) | 2027-06-09 → 2027-06-16 (+7d) | 8d → 2d |
| 3 | **Electrical** | 2027-04-14 → 2027-04-21 (+7d) | 2027-04-29 → 2027-05-06 (+7d) |  |
| SDR-2-CLO-AS-E-1000 | Electrical As-Built Drawing Submission | 2027-04-14 → 2027-04-21 (+7d) | 2027-04-21 → 2027-04-28 (+7d) | 13d → 7d |
| SDR-2-CLO-AS-E-1010 | Electrical As-Built Drawing Approvals | 2027-04-22 → 2027-04-29 (+7d) | 2027-04-29 → 2027-05-06 (+7d) | 13d → 7d |
| 2 | **Training and Manuals** | 2027-06-10 → 2027-06-17 (+7d) | 2027-06-26 → 2027-07-03 (+7d) |  |
| SDR-2-CLO-TM-1000 | Training and Manuals | 2027-06-10 → 2027-06-17 (+7d) | 2027-06-26 → 2027-07-03 (+7d) | 8d → 2d |
| 3 | **Demobilize Manpower** | 2027-06-10 → 2027-06-17 (+7d) | 2027-06-26 → 2027-07-03 (+7d) |  |
| SDR-2-CLO-DM-1000 | Manpower Demobilize | 2027-06-10 → 2027-06-17 (+7d) | 2027-06-26 → 2027-07-03 (+7d) | 8d → 2d |
| 4 | **Demobilize Equipment** | 2027-06-10 → 2027-06-17 (+7d) | 2027-06-26 → 2027-07-03 (+7d) |  |
| SDR-2-CLO-DE-1000 | Equipments Demobilize | 2027-06-10 → 2027-06-17 (+7d) | 2027-06-26 → 2027-07-03 (+7d) | 8d → 2d |
| 5 | **Removal of Site Offices and Structures** | 2027-06-10 → 2027-06-17 (+7d) | 2027-06-26 → 2027-07-03 (+7d) |  |
| SDR-2-CLO-RO-1000 | Site Office Removal | 2027-06-10 → 2027-06-17 (+7d) | 2027-06-26 → 2027-07-03 (+7d) | 8d → 2d |
| 6 | **Handover** | 2027-06-28 → 2027-06-27 (-1d) | 2027-07-04 → 2027-07-03 (-1d) |  |
| SDR-2-CLO-HO-1000 | Project Handover | 2027-06-28 → 2027-06-27 (-1d) | 2027-07-04 → 2027-07-03 (-1d) | 1.7d → 2.44d |

## Version 5 (data date 2026-10-19, saved 2026-10-19, file Sudair 2 P2 19.10.26 INFRA.xer)

Note of the change: Weekly folders named by the Thursday the week ends on: a report dated after one Thursday up to the next goes in the next Thursday's folder (26-Oct → W05 - 29-Oct-2026); all weeks moved accordingly, W00 removed

Last finish stays 2027-07-05. Complete tasks 743 → 787.

Changed:

| ID | Task | Start | Finish | Duration | Complete | Total float | Predecessors |
| --- | --- | --- | --- | --- | --- | --- | --- |
| 3 | **Contractual Milestone** |  | 2027-06-28 → 2027-06-27 (-1d) |  |  |  |  |
| SDR-2-MILS-1060 | Completion of medium voltage works | 2027-02-11 → 2027-02-18 (+7d) | 2027-02-11 → 2027-02-18 (+7d) |  |  | 33d → 27d |  |
| SDR-2-MILS-1070 | Completion of All Network work | 2027-05-05 → 2027-04-14 (-21d) | 2027-05-05 → 2027-04-14 (-21d) |  |  | 47d → 65d |  |
| SDR-2-MILS-1050 | Completion of road works | 2027-04-10 → 2027-04-17 (+7d) | 2027-04-10 → 2027-04-17 (+7d) |  |  | 24d → 18d |  |
| SDR-2-MILS-1080 | Completion of finishing works in the project | 2027-06-28 → 2027-06-27 (-1d) | 2027-06-28 → 2027-06-27 (-1d) |  |  | 6.44d → 7.7d |  |
| 2 | **Phases Milestone** | 2026-10-12 → 2026-10-19 (+7d) |  |  |  |  |  |
| SDR-2-MILS-1090 | Engineering Phase Finish Milestone | 2026-10-12 → 2026-10-19 (+7d) | 2026-10-12 → 2026-10-19 (+7d) |  |  | 78d → 83d |  |
| SDR-2-MILS-1100 | Procurment Phase Finish Milestone | 2026-11-18 → 2026-12-22 (+34d) | 2026-11-18 → 2026-12-22 (+34d) |  |  | 60.1d → 36d |  |
| EN | **Engineering** |  | 2026-10-12 → 2026-10-31 (+19d) |  |  |  |  |
| 1 | **Shop Drawings Stage** |  | 2026-10-12 → 2026-10-31 (+19d) |  |  |  |  |
| 4 | **Approvals** |  | 2026-10-12 → 2026-10-31 (+19d) |  |  |  |  |
| 9 | **Electrical** |  | 2026-10-12 → 2026-10-31 (+19d) |  |  |  |  |
| SDR-2-ENG-APP-E-1000 | MV Network Layout Approval | 2026-06-15 A → 2026-10-19 (+126d) | 2026-10-12 → 2026-10-31 (+19d) |  |  |  |  |
| SDR-2-ENG-APP-E-1010 | MV Single Line Diagram Approval | 2026-06-15 A → 2026-10-19 (+126d) | 2026-10-12 → 2026-10-31 (+19d) |  |  |  |  |
| SDR-2-ENG-APP-E-1020 | Design Of MV Loops Approval | 2026-06-15 A → 2026-10-19 (+126d) | 2026-10-12 → 2026-10-31 (+19d) |  |  |  |  |
| SDR-2-ENG-APP-E-1030 | Loads For Plots Approval | 2026-06-15 A → 2026-10-19 (+126d) | 2026-10-12 → 2026-10-31 (+19d) |  |  |  |  |
| SDR-2-ENG-APP-E-1040 | Distribution Substation Approval | 2026-06-15 A → 2026-10-19 (+126d) | 2026-10-12 → 2026-10-31 (+19d) |  |  |  |  |
| SDR-2-ENG-APP-E-1050 | MV Trench Configuration Details Approval | 2026-06-15 A → 2026-10-19 (+126d) | 2026-10-12 → 2026-10-31 (+19d) |  |  |  |  |
| SDR-2-ENG-APP-E-1060 | MV Electrical Duct Banks Details Approval | 2026-06-15 A → 2026-10-19 (+126d) | 2026-10-12 → 2026-10-31 (+19d) |  |  |  |  |
| SDR-2-ENG-APP-E-1070 | Distribution Transformers Approval | 2026-06-15 A → 2026-10-19 (+126d) | 2026-10-12 → 2026-10-31 (+19d) |  |  |  |  |
| 11 | **CCTV** |  | 2026-10-12 → 2026-10-31 (+19d) |  |  |  |  |
| SDR-2-ENG-APP-E-1280 | Typical Solar Panel Installation Detail Approval | 2026-06-15 A → 2026-10-19 (+126d) | 2026-10-12 → 2026-10-31 (+19d) |  |  |  |  |
| 3 | **Materials** |  | 2026-10-12 → 2026-10-21 (+9d) |  |  |  |  |
| 6 | **Materials Approval** |  | 2026-10-12 → 2026-10-21 (+9d) |  |  |  |  |
| 2 | **Short Lead Items** |  | 2026-10-12 → 2026-10-21 (+9d) |  |  |  |  |
| 1 | **Civil** |  | 2026-10-12 → 2026-10-21 (+9d) |  |  |  |  |
| SDR-2-PRO-MAS-C-1030 | Road Marking Approve | 2026-02-18 A → 2026-10-19 (+243d) | 2026-10-12 → 2026-10-21 (+9d) |  |  |  |  |
| SDR-2-PRO-MAS-C-1060 | Traffic Signage Approve | 2026-02-23 A → 2026-10-19 (+238d) | 2026-10-12 → 2026-10-21 (+9d) |  |  |  |  |
| PR | **Procurement** |  | 2027-01-31 → 2027-02-21 (+21d) |  |  |  |  |
| 3 | **Purchase Order** |  | 2026-10-26 → 2026-11-02 (+7d) |  |  |  |  |
| 1 | **Civil** |  | 2026-10-26 → 2026-11-02 (+7d) |  |  |  |  |
| SDR-2-PRO-PO-C-1020 | Asphalt Mix PO |  | 2026-10-12 → 2026-03-30 A (-196d) |  | 15% → 100% | 77d → none |  |
| SDR-2-PRO-PO-C-1030 | Kerbstone PO |  | 2026-10-12 → 2026-09-30 A (-12d) |  | 10% → 100% | 35.9d → none |  |
| SDR-2-PRO-PO-C-1050 | Interlock Tiles PO |  | 2026-10-12 → 2026-09-30 A (-12d) |  | 10% → 100% | 100d → none |  |
| SDR-2-PRO-PO-C-1040 | Road Marking PO | 2026-05-06 A → 2026-10-19 (+166d) | 2026-10-12 → 2026-11-02 (+21d) | 14d → 13d |  | 12d → 8d |  |
| SDR-2-PRO-PO-C-1060 | Traffic Signage PO | 2026-10-12 → 2026-10-19 (+7d) | 2026-10-26 → 2026-11-02 (+7d) |  |  | 3d → 8d |  |
| SDR-2-PRO-PO-C-1080 | Fence for Electrical works PO | 2026-10-12 → 2026-10-19 (+7d) | 2026-10-26 → 2026-11-02 (+7d) |  |  | 24d → 18d |  |
| SDR-2-PRO-PO-C-1090 | Protection Bollards for CCTV Pole PO | 2026-08-10 A → 2026-10-19 (+70d) | 2026-10-12 → 2026-11-02 (+21d) |  |  | 88d → 81d |  |
| SDR-2-PRO-PO-C-1100 | Protection (Guard rail) for Fire hydrant PO | 2026-10-12 → 2026-10-19 (+7d) | 2026-10-19 → 2026-10-26 (+7d) |  |  | 10d → 18d |  |
| 3 | **Electrical** |  | 2026-10-12 → 2026-11-02 (+21d) |  |  |  |  |
| SDR-2-PRO-PO-E-1150 | CCTV Poles including all hardwares PO |  | 2026-10-12 → 2026-09-30 A (-12d) |  | 0% → 100% | 66d → none |  |
| SDR-2-PRO-PO-E-1160 | CCTV Cables "Power" PO |  | 2026-10-12 → 2026-09-30 A (-12d) |  | 0% → 100% | 66d → none |  |
| SDR-2-PRO-PO-E-1170 | CCTV Cables "CAT6" PO |  | 2026-10-12 → 2026-09-30 A (-12d) |  | 0% → 100% | 21.9d → none |  |
| SDR-2-PRO-PO-E-1190 | CCTV System,Servers & WorkStations PO |  | 2026-10-12 → 2026-10-01 A (-11d) |  | 0% → 100% | 72d → none |  |
| SDR-2-PRO-PO-E-1240 | CCTV Solar System PO |  | 2026-10-12 → 2026-10-01 A (-11d) |  | 0% → 100% | 77d → none |  |
| SDR-2-PRO-PO-E-1140 | PECD Ducts for CCTV network PO |  | 2026-10-12 → 2026-09-30 A (-12d) |  | 0% → 100% | 12.9d → none |  |
| SDR-2-PRO-PO-E-1130 | Main Feeder Pillar PO |  | 2026-10-12 → 2026-09-30 A (-12d) |  | 0% → 100% | 11d → none |  |
| SDR-2-PRO-PO-E-1100 | Unit Substation PO | 2026-04-15 A → 2026-10-19 (+187d) | 2026-10-12 → 2026-11-02 (+21d) |  |  | 5d → 11d | SDR-2-PRO-MAL-E-1070, SDR-2-MILS-1000 FS+87d → SDR-2-PRO-MAL-E-1070, SDR-2-MILS-1000 FS+80d |
| SDR-2-PRO-PO-E-1120 | KWH Meter with mounting frame PO | 2026-05-02 A → 2026-10-19 (+170d) | 2026-10-12 → 2026-11-02 (+21d) |  |  | 2d → 10d |  |
| 1 | **Delivery to Site** |  | 2027-01-27 → 2027-02-17 (+21d) |  |  |  |  |
| 2 | **Short Lead Items Delivery** |  | 2027-01-27 → 2027-02-17 (+21d) |  |  |  |  |
| 1 | **Civil** |  | 2027-01-27 → 2027-02-17 (+21d) |  |  |  |  |
| SDR-2-PRO-DES-C-1020 | Asphalt Mix Delivery |  | 2026-12-29 → 2027-01-05 (+7d) |  | 0% → 30% | 12.1d → 18.1d |  |
| SDR-2-PRO-DES-C-1030 | Kerbstone Delivery |  | 2026-11-21 → 2026-11-28 (+7d) |  |  |  |  |
| SDR-2-PRO-DES-C-1050 | Interlock Tiles Delivery |  | 2026-11-01 → 2026-11-08 (+7d) |  |  | 97.1d → 107.1d |  |
| SDR-2-PRO-DES-C-1090 | Protection Bollards for CCTV Pole Delivery | 2026-10-13 → 2026-11-03 (+21d) | 2026-10-29 → 2026-11-19 (+21d) |  |  | 103d → 95d |  |
| SDR-2-PRO-DES-C-1100 | Protection (Guard rail) for Fire hydrant Delivery | 2026-10-27 → 2026-11-03 (+7d) | 2026-12-25 → 2027-01-01 (+7d) |  |  | 12d → 21d |  |
| SDR-2-PRO-DES-C-1040 | Road Marking Delivery | 2026-10-30 → 2026-11-20 (+21d) | 2027-01-27 → 2027-02-17 (+21d) |  |  | 14d → 10d |  |
| SDR-2-PRO-DES-C-1080 | Fence for Electrical works Delivery | 2026-11-15 → 2026-11-22 (+7d) | 2026-12-13 → 2026-12-20 (+7d) |  |  | 28d → 21d |  |
| SDR-2-PRO-DES-C-1060 | Traffic Signage Manufacture and Delivery | 2026-11-20 → 2026-11-27 (+7d) | 2026-12-09 → 2026-12-16 (+7d) |  |  | 4d → 10d |  |
| 3 | **Electrical** |  | 2026-10-14 → 2026-11-24 (+41d) |  |  |  |  |
| SDR-2-PRO-DES-E-1020 | PECD Ducts for CCTV network Delivery | 2026-08-17 A → 2026-10-19 (+63d) | 2026-10-14 → 2026-11-24 (+41d) |  |  | 13d → 6d |  |
| 5 | **Long Lead Items Delivery** |  | 2026-12-20 → 2026-12-27 (+7d) |  |  |  |  |
| 3 | **Electrical** |  | 2026-12-20 → 2026-12-27 (+7d) |  |  |  |  |
| SDR-2-PRO-DEL-E-1020 | Street Lighting Poles Delivery | 2026-10-12 → 2026-10-19 (+7d) | 2026-12-20 → 2026-12-27 (+7d) |  |  | 2d → 8d |  |
| SDR-2-PRO-DEL-E-1030 | Street Lighting Fixtures Delivery | 2026-10-12 → 2026-10-19 (+7d) | 2026-12-20 → 2026-12-27 (+7d) |  |  | 2d → 8d |  |
| SDR-2-PRO-DEL-E-1070 | Unit Substation Delivery | 2026-10-13 → 2026-10-19 (+6d) | 2026-12-16 → 2026-12-22 (+6d) |  |  | 6d → 13d | SDR-2-PRO-PO-E-1100 → SDR-2-PRO-PO-E-1100 SS |
| SDR-2-PRO-DEL-E-1080 | Lighting Panels Delivery | 2026-10-12 → 2026-10-19 (+7d) | 2026-12-15 → 2026-12-22 (+7d) |  |  | 13d → 6d |  |
| SDR-2-PRO-DEL-E-1090 | KWH Meter with mounting frame Delivery | 2026-10-13 → 2026-10-19 (+6d) | 2026-12-01 → 2026-12-07 (+6d) |  |  | 2d → 12d | SDR-2-PRO-PO-E-1120 → SDR-2-PRO-PO-E-1120 SS |
| SDR-2-PRO-DEL-E-1100 | Main Feeder Pillar Manufacture and Delivery | 2026-10-27 → 2026-10-19 (-8d) | 2026-12-15 → 2026-12-07 (-8d) |  |  | 13d → 21d |  |

| ID | Task | Start | Finish | Complete | Total float |
| --- | --- | --- | --- | --- | --- |
| SDR-2-PRO-DEL-E-1110 | CCTV Poles including all hardwares Delivery | 2026-08-24 A → 2026-10-19 (+56d) | 2026-11-18 → 2026-12-22 (+34d) |  | 40.1d → 6d |
| SDR-2-PRO-DEL-E-1120 | CCTV Cables "Power" Delivery | 2026-08-24 A → 2026-10-19 (+56d) | 2026-11-18 → 2026-12-22 (+34d) |  | 40.1d → 6d |
| SDR-2-PRO-DEL-E-1130 | CCTV Cables "CAT6" Delivery | 2026-08-24 A → 2026-10-19 (+56d) | 2026-10-29 → 2026-12-02 (+34d) |  | 9d → 2d |
| SDR-2-PRO-DEL-E-1150 | CCTV System,Servers & WorkStations Delivery | 2026-08-24 A → 2026-10-19 (+56d) | 2026-11-03 → 2026-12-07 (+34d) |  | 62.1d → 28d |
| SDR-2-PRO-DEL-E-1200 | CCTV Solar System Delivery | 2026-08-24 A → 2026-10-19 (+56d) | 2026-11-08 → 2026-12-12 (+34d) |  | 63.1d → 41d |
| 2 | **Mechanical** |  | 2026-10-12 → 2026-10-01 (-11d) |  |  |
| SDR-2-PRO-DEL-M-1030 | Manhole Delivery |  | 2026-10-12 → 2026-09-12 A (-30d) | 0% → 100% | 61d → none |
| SDR-2-PRO-DEL-M-1050 | Manhole, Catch basin and Valve box Cover Delivery |  | 2026-10-12 → 2026-09-12 A (-30d) | 0% → 100% | 61d → none |
| SDR-2-PRO-DEL-M-1060 | Fire Hydrant Delivery |  | 2026-10-12 → 2026-09-21 A (-21d) | 0% → 100% | 77d → none |
| SDR-2-PRO-DEL-M-1070 | Valve of Fire Hydrant Delivery |  | 2026-10-12 → 2026-09-21 A (-21d) | 0% → 100% | 77d → none |
| SDR-2-PRO-DEL-M-1020 | Valves Delivery |  | 2026-10-12 → 2026-10-01 A (-11d) | 0% → 100% | 62d → none |
| SDR-2-PRO-DEL-M-1040 | Catch Basin Delivery |  | 2026-10-12 → 2026-09-12 A (-30d) | 0% → 100% | 2d → none |
| 4 | **Materials Staging Time** |  | 2027-01-31 → 2027-02-21 (+21d) |  |  |
| 1 | **Civil** |  | 2027-01-31 → 2027-02-21 (+21d) |  |  |
| SDR-2-PRO-ST-C-1050 | Interlock Tiles staging |  | 2026-11-05 → 2026-11-12 (+7d) |  | 97.1d → 107.1d |
| SDR-2-PRO-ST-C-1030 | Kerbstone staging |  | 2026-11-21 → 2026-11-28 (+7d) |  | 60.1d → 70.1d |
| SDR-2-PRO-ST-C-1090 | Protection Bollards for CCTV Pole staging | 2026-11-03 → 2026-11-24 (+21d) | 2026-11-06 → 2026-11-27 (+21d) |  | 103d → 95d |
| SDR-2-PRO-ST-C-1060 | Traffic Signage staging | 2026-12-10 → 2026-12-17 (+7d) | 2026-12-13 → 2026-12-20 (+7d) |  | 116d → 126d |
| SDR-2-PRO-ST-C-1080 | Fence for Electrical works staging | 2026-12-14 → 2026-12-21 (+7d) | 2026-12-17 → 2026-12-24 (+7d) |  | 28d → 21d |
| SDR-2-PRO-ST-C-1100 | Protection (Guard rail) for Fire hydrant staging | 2026-12-26 → 2027-01-02 (+7d) | 2026-12-29 → 2027-01-05 (+7d) |  | 12d → 21d |
| SDR-2-PRO-ST-C-1020 | Asphalt Mix staging | 2026-12-29 → 2027-01-05 (+7d) | 2026-12-29 → 2027-01-05 (+7d) |  | 14.1d → 28.2d |
| SDR-2-PRO-ST-C-1040 | Road Marking staging | 2027-01-28 → 2027-02-18 (+21d) | 2027-01-31 → 2027-02-21 (+21d) |  | 35d → 30d |
| 2 | **Mechanical** |  | 2026-10-12 → 2026-09-22 (-20d) |  |  |
| SDR-2-PRO-ST-M-1050 | Manhole, Catch basin and Valve box Cover staging |  | 2026-10-12 → 2026-09-12 A (-30d) | 0% → 100% | 62d → none |
| SDR-2-PRO-ST-M-1030 | Manhole staging |  | 2026-10-12 → 2026-09-12 A (-30d) | 0% → 100% | 202d → none |
| SDR-2-PRO-ST-M-1020 | Valves staging |  | 2026-10-12 → 2026-09-22 A (-20d) | 0% → 100% | 76d → none |
| SDR-2-PRO-ST-M-1060 | Fire Hydrant staging |  | 2026-10-12 → 2026-09-21 A (-21d) | 0% → 100% | 120d → none |
| SDR-2-PRO-ST-M-1070 | Valve of Fire Hydrant staging |  | 2026-10-12 → 2026-09-21 A (-21d) | 0% → 100% | 120d → none |
| SDR-2-PRO-ST-M-1040 | Catch Basin staging |  | 2026-10-12 → 2026-09-12 A (-30d) | 0% → 100% | 117d → none |
| 3 | **Electrical** |  | 2026-12-11 → 2027-01-01 (+21d) |  |  |
| SDR-2-PRO-ST-E-1030 | Street Lighting Poles staging | 2026-10-12 → 2026-10-19 (+7d) | 2026-10-21 → 2026-10-28 (+7d) |  | 31d → 24d |
| SDR-2-PRO-ST-E-1040 | Street Lighting Fixtures staging | 2026-10-12 → 2026-10-19 (+7d) | 2026-10-21 → 2026-10-28 (+7d) |  | 31d → 24d |
| SDR-2-PRO-ST-E-1100 | Unit Substation staging | 2026-10-13 → 2026-10-19 (+6d) | 2026-10-22 → 2026-10-28 (+6d) |  | 53d → 90d |
| SDR-2-PRO-ST-E-1110 | Lighting Panels staging | 2026-10-12 → 2026-10-19 (+7d) | 2026-10-21 → 2026-10-28 (+7d) |  | 52d → 51d |
| SDR-2-PRO-ST-E-1130 | Main Feeder Pillar staging | 2026-10-29 → 2026-10-21 (-8d) | 2026-11-07 → 2026-10-30 (-8d) |  | 35d → 49d |
| SDR-2-PRO-ST-E-1140 | PECD Ducts for CCTV network staging | 2026-10-14 → 2026-11-25 (+42d) | 2026-10-24 → 2026-12-04 (+41d) |  | 65.1d → 24d |
| SDR-2-PRO-ST-E-1170 | CCTV Cables "CAT6" staging | 2026-10-29 → 2026-12-03 (+35d) | 2026-11-08 → 2026-12-12 (+34d) |  | 50.1d → 16d |
| SDR-2-PRO-ST-E-1120 | KWH Meter with mounting frame staging | 2026-12-02 → 2026-12-08 (+6d) | 2026-12-11 → 2026-12-17 (+6d) |  | 2d → 12d |
| SDR-2-PRO-ST-E-1190 | CCTV System,Servers & WorkStations staging | 2026-11-03 → 2026-12-08 (+35d) | 2026-11-13 → 2026-12-17 (+34d) |  | 62.1d → 28d |
| SDR-2-PRO-ST-E-1240 | CCTV Solar System staging | 2026-11-08 → 2026-12-13 (+35d) | 2026-11-18 → 2026-12-22 (+34d) |  | 70.1d → 41d |
| SDR-2-PRO-ST-E-1150 | CCTV Poles including all hardwares staging | 2026-11-18 → 2026-12-23 (+35d) | 2026-11-28 → 2027-01-01 (+34d) |  | 47.1d → 13d |
| SDR-2-PRO-ST-E-1160 | CCTV Cables "Power" staging | 2026-11-18 → 2026-12-23 (+35d) | 2026-11-28 → 2027-01-01 (+34d) |  | 47.1d → 13d |
| RO | **ROAD WORKS** |  | 2027-04-26 → 2027-05-15 (+19d) |  |  |
| ZA | **ZONE A** |  | 2027-04-26 → 2027-05-15 (+19d) |  |  |
| 1 | **ROAD WORKS IN ( PH2-COL-MC10 )** |  | 2027-04-24 → 2027-05-15 (+21d) |  |  |
| 8 | **Demolition Work** | 2026-10-12 → 2026-10-13 (+1d) | 2026-10-25 → 2026-10-19 (-6d) |  |  |
| SDR-2-CON-RW-ZA-1080 | Milling of wearing course | 2026-10-12 → 2026-10-13 A (+1d) | 2026-10-25 → 2026-10-19 A (-6d) | 0% → 100% | 68d → none |
| 3 | **Asphalt Works** | 2026-12-29 → 2026-10-13 (-77d) | 2027-02-03 → 2027-02-06 (+3d) |  |  |
| SDR-2-CON-RW-ZA-1090 | Asphalt works 2st Layer with RC-01 | 2026-12-29 → 2026-10-13 A (-77d) | 2027-01-17 → 2026-10-19 A (-90d) | 0% → 100% | 12.1d → none |
| SDR-2-CON-RW-ZA-1100 | Asphalt works 3nd layer with RC-02 | 2027-01-10 → 2027-01-12 (+2d) | 2027-02-03 → 2027-02-06 (+3d) |  | 12.1d → 24.2d |
| 4 | **Kerbstone Installation** | 2026-11-21 → 2026-11-28 (+7d) | 2027-02-21 → 2027-02-24 (+3d) |  |  |
| SDR-2-CON-RW-ZA-3400 | Kerbstone Installation "all Types" Part1 | 2026-11-21 → 2026-11-28 (+7d) | 2026-12-12 → 2026-12-19 (+7d) |  | 52.1d → 60.1d |
| SDR-2-CON-RW-ZA-1110 | Kerbstone Installation "all Types" Part2 | 2027-01-27 → 2027-01-30 (+3d) | 2027-02-21 → 2027-02-24 (+3d) |  | 12.1d → 24.2d |
| 5 | **Interlock Installation** | 2027-01-28 → 2027-02-18 (+21d) | 2027-02-21 → 2027-03-20 (+27d) |  |  |
| SDR-2-CON-RW-ZA-1120 | Interlock Installation | 2027-01-28 → 2027-02-18 (+21d) | 2027-02-21 → 2027-03-20 (+27d) |  | 12d → 8d |
| 6 | **Road Marking** | 2027-02-23 → 2027-03-21 (+26d) | 2027-03-31 → 2027-04-21 (+21d) |  |  |
| SDR-2-CON-RW-ZA-1130 | Retroreflective Thermoplastic White Traffic lines | 2027-02-23 → 2027-03-21 (+26d) | 2027-03-15 → 2027-04-05 (+21d) |  | 12d → 8d |
| SDR-2-CON-RW-ZA-1140 | Retroreflective Thermoplastic Yellow, Traffic lines | 2027-03-16 → 2027-04-06 (+21d) | 2027-03-31 → 2027-04-21 (+21d) |  | 12d → 8d |
| 7 | **Traffic Signage** | 2027-04-01 → 2027-04-22 (+21d) | 2027-04-24 → 2027-05-15 (+21d) |  |  |
| SDR-2-CON-RW-ZA-1150 | Single post-Traffic signs Installation | 2027-04-01 → 2027-04-22 (+21d) | 2027-04-24 → 2027-05-15 (+21d) |  | 12d → 8d |
| 8 | **ROAD WORKS IN ( PH2-COL-MC20 )** |  | 2027-04-26 → 2027-05-03 (+7d) |  |  |
| 2 | **Base Course** |  | 2026-11-02 → 2026-10-15 (-18d) |  |  |
| SDR-2-CON-RW-ZA-1210 | Aggregate base course layer |  | 2026-11-02 → 2026-10-15 A (-18d) | 90% → 100% | 25d → none |
| 8 | **Demolition Work** | 2026-11-03 → 2026-10-15 (-19d) | 2026-11-09 → 2026-10-17 (-23d) |  |  |
| SDR-2-CON-RW-ZA-1220 | Milling of wearing course | 2026-11-03 → 2026-10-15 A (-19d) | 2026-11-09 → 2026-10-17 A (-23d) | 0% → 100% | 25d → none |
| 3 | **Asphalt Works** | 2026-11-10 → 2026-10-18 (-23d) | 2027-01-02 → 2026-12-10 (-23d) |  |  |
| SDR-2-CON-RW-ZA-1230 | Asphalt works 1st Layer with MC-01 | 2026-11-10 → 2026-10-18 A (-23d) | 2026-11-19 → 2026-10-28 (-22d) | 0% → 30% | 25d → 58d |
| SDR-2-CON-RW-ZA-1240 | Asphalt works 2nd layer with RC-01 | 2026-11-21 → 2026-10-29 (-23d) | 2026-12-10 → 2026-11-18 (-22d) |  | 25d → 58d |
| SDR-2-CON-RW-ZA-2840 | Asphalt Works 3 rd Layer with RC-02 | 2026-12-12 → 2026-11-19 (-23d) | 2027-01-02 → 2026-12-10 (-23d) |  | 25d → 58d |
| 4 | **Kerbstone Installation** | 2026-12-30 → 2027-01-06 (+7d) | 2027-02-13 → 2027-02-20 (+7d) |  |  |

| ID | Task | Start | Finish | Complete | Total float |
| --- | --- | --- | --- | --- | --- |
| SDR-2-CON-RW-ZA-3410 | Kerbstone Installation "all Types" Part 1 | 2026-12-30 → 2027-01-06 (+7d) | 2027-01-19 → 2027-01-26 (+7d) |  | 10d → 18d |
| SDR-2-CON-RW-ZA-1250 | Kerbstone Installation "all Types" Part 2 | 2027-01-20 → 2027-01-27 (+7d) | 2027-02-13 → 2027-02-20 (+7d) |  | 10d → 18d |
| 5 | **Interlock Installation** | 2027-02-14 → 2027-02-21 (+7d) | 2027-03-15 → 2027-03-22 (+7d) |  |  |
| SDR-2-CON-RW-ZA-1260 | Interlock Installation | 2027-02-14 → 2027-02-21 (+7d) | 2027-03-15 → 2027-03-22 (+7d) |  | 10d → 18d |
| 6 | **Road Marking** | 2027-03-16 → 2027-03-23 (+7d) | 2027-04-05 → 2027-04-12 (+7d) |  |  |
| SDR-2-CON-RW-ZA-1270 | Retroreflective Thermoplastic White Traffic lines | 2027-03-16 → 2027-03-23 (+7d) | 2027-03-28 → 2027-04-04 (+7d) |  | 10d → 18d |
| SDR-2-CON-RW-ZA-1280 | Retroreflective Thermoplastic Yellow, Traffic lines | 2027-03-29 → 2027-04-05 (+7d) | 2027-04-05 → 2027-04-12 (+7d) |  | 10d → 18d |
| 7 | **Traffic Signage** | 2027-04-06 → 2027-04-13 (+7d) | 2027-04-26 → 2027-05-03 (+7d) |  |  |
| SDR-2-CON-RW-ZA-1290 | Single post-Traffic signs Installation | 2027-04-06 → 2027-04-13 (+7d) | 2027-04-26 → 2027-05-03 (+7d) |  | 10d → 18d |
| 13 | **ROAD WORKS IN ( PH2-A-MCI0 )** |  | 2027-04-22 → 2027-04-29 (+7d) |  |  |
| 11 | **Subgrade** |  | 2026-11-03 → 2026-11-10 (+7d) |  |  |
| SDR-2-CON-RW-ZA-1320 | Subgrade layer works |  | 2026-11-03 → 2026-11-10 (+7d) | 10% → 25% | 9d → 17d |
| 2 | **Base Course** | 2026-11-04 → 2026-11-11 (+7d) | 2026-11-26 → 2026-12-03 (+7d) |  |  |
| SDR-2-CON-RW-ZA-1350 | Aggregate base course layer | 2026-11-04 → 2026-11-11 (+7d) | 2026-11-26 → 2026-12-03 (+7d) |  | 9d → 17d |
| 8 | **Demolition Work** | 2026-11-28 → 2026-12-05 (+7d) | 2026-12-02 → 2026-12-09 (+7d) |  |  |
| SDR-2-CON-RW-ZA-1360 | Milling of wearing course | 2026-11-28 → 2026-12-05 (+7d) | 2026-12-02 → 2026-12-09 (+7d) |  | 9d → 17d |
| 3 | **Asphalt Works** | 2026-12-03 → 2026-12-10 (+7d) | 2027-01-02 → 2027-01-09 (+7d) |  |  |
| SDR-2-CON-RW-ZA-1370 | Asphalt works 1st Layer with MC-01 | 2026-12-03 → 2026-12-10 (+7d) | 2026-12-08 → 2026-12-15 (+7d) |  | 9d → 17d |
| SDR-2-CON-RW-ZA-1380 | Asphalt works 2nd layer with RC-02 | 2026-12-09 → 2026-12-16 (+7d) | 2027-01-02 → 2027-01-09 (+7d) |  | 9d → 17d |
| 4 | **Kerbstone Installation** | 2026-10-14 → 2026-10-19 (+5d) | 2027-01-26 → 2027-02-02 (+7d) |  |  |
| SDR-2-CON-RW-ZA-3420 | Kerbstone Installation "all Types" Part 1 | 2026-10-14 → 2026-10-19 (+5d) | 2026-11-03 → 2026-11-08 (+5d) |  | 21d → 31d |
| SDR-2-CON-RW-ZA-1390 | Kerbstone Installation "all Types" Part 2 | 2027-01-03 → 2027-01-10 (+7d) | 2027-01-26 → 2027-02-02 (+7d) |  | 9d → 17d |
| 5 | **Interlock Installation** | 2027-01-27 → 2027-02-03 (+7d) | 2027-02-20 → 2027-02-28 (+8d) |  |  |
| SDR-2-CON-RW-ZA-1400 | Interlock Installation | 2027-01-27 → 2027-02-03 (+7d) | 2027-02-20 → 2027-02-28 (+8d) |  | 9d → 17d |
| 6 | **Road Marking** | 2027-02-21 → 2027-03-01 (+8d) | 2027-03-30 → 2027-04-06 (+7d) |  |  |
| SDR-2-CON-RW-ZA-1410 | Retroreflective Thermoplastic White Traffic lines | 2027-02-21 → 2027-03-01 (+8d) | 2027-03-14 → 2027-03-21 (+7d) |  | 9d → 17d |
| SDR-2-CON-RW-ZA-1420 | Retroreflective Thermoplastic Yellow, Traffic lines | 2027-03-15 → 2027-03-22 (+7d) | 2027-03-30 → 2027-04-06 (+7d) |  | 9d → 17d |
| 7 | **Traffic Signage** | 2027-03-31 → 2027-04-07 (+7d) | 2027-04-22 → 2027-04-29 (+7d) |  |  |
| SDR-2-CON-RW-ZA-1430 | Single post-Traffic signs Installation | 2027-03-31 → 2027-04-07 (+7d) | 2027-04-22 → 2027-04-29 (+7d) |  | 9d → 17d |
| 2 | **ROAD WORKS IN ( PH2-A-MCA0 )** |  | 2027-04-13 → 2027-04-19 (+6d) |  |  |
| 11 | **Subgrade** |  | 2026-10-15 → 2026-10-22 (+7d) |  |  |
| SDR-2-CON-RW-ZA-1460 | Subgrade layer works |  | 2026-10-15 → 2026-10-22 (+7d) | 30% → 40% | 22d → 25d |
| 9 | **Earth Works Plot** |  | 2026-11-09 → 2026-11-16 (+7d) |  |  |
| SDR-2-CON-RW-ZA-1470 | Plot Excavation for cuttings (all types of soil) |  | 2026-11-09 → 2026-11-16 (+7d) |  | 31d → 25d |
| SDR-2-CON-RW-ZA-1480 | Embankments to the Plot 2 Layer | 2026-06-22 A → 2026-10-19 (+119d) | 2026-10-12 → 2026-11-11 (+30d) |  | 70d → 44d |
| 2 | **Base Course** | 2026-10-17 → 2026-10-24 (+7d) | 2026-11-02 → 2026-11-09 (+7d) |  |  |
| SDR-2-CON-RW-ZA-1490 | Aggregate base course layer | 2026-10-17 → 2026-10-24 (+7d) | 2026-11-02 → 2026-11-09 (+7d) |  | 22d → 30d |
| 8 | **Demolition Work** | 2026-11-04 → 2026-11-10 (+6d) | 2026-11-08 → 2026-11-14 (+6d) |  |  |
| SDR-2-CON-RW-ZA-1500 | Milling of wearing course | 2026-11-04 → 2026-11-10 (+6d) | 2026-11-08 → 2026-11-14 (+6d) |  | 21d → 30d |
| 3 | **Asphalt Works** | 2026-11-09 → 2026-11-15 (+6d) | 2026-12-22 → 2026-12-28 (+6d) |  |  |
| SDR-2-CON-RW-ZA-1510 | Asphalt works 1st Layer with MC-01 | 2026-11-09 → 2026-11-15 (+6d) | 2026-11-29 → 2026-12-05 (+6d) |  | 21d → 30d |
| SDR-2-CON-RW-ZA-1520 | Asphalt works 2nd layer with RC-02 | 2026-11-30 → 2026-12-06 (+6d) | 2026-12-22 → 2026-12-28 (+6d) |  | 21d → 30d |
| 4 | **Kerbstone Installation** | 2026-10-17 → 2026-10-24 (+7d) | 2027-01-16 → 2027-01-21 (+5d) |  |  |
| SDR-2-CON-RW-ZA-3440 | Kerbstone Installation "all Types" Part 1 | 2026-10-17 → 2026-10-24 (+7d) | 2026-11-09 → 2026-11-16 (+7d) |  | 58d → 66d |
| SDR-2-CON-RW-ZA-1530 | Kerbstone Installation "all Types" Part 2 | 2026-12-23 → 2026-12-29 (+6d) | 2027-01-16 → 2027-01-21 (+5d) |  | 21d → 30d |
| 5 | **Interlock Installation** | 2027-01-17 → 2027-01-23 (+6d) | 2027-02-09 → 2027-02-15 (+6d) |  |  |
| SDR-2-CON-RW-ZA-1540 | Interlock Installation | 2027-01-17 → 2027-01-23 (+6d) | 2027-02-09 → 2027-02-15 (+6d) |  | 21d → 30d |
| 6 | **Road Marking** | 2027-02-10 → 2027-02-16 (+6d) | 2027-03-21 → 2027-03-27 (+6d) |  |  |
| SDR-2-CON-RW-ZA-1550 | Retroreflective Thermoplastic White Traffic lines | 2027-02-10 → 2027-02-16 (+6d) | 2027-02-27 → 2027-03-04 (+5d) |  | 21d → 30d |
| SDR-2-CON-RW-ZA-1560 | Retroreflective Thermoplastic Yellow, Traffic lines | 2027-02-28 → 2027-03-06 (+6d) | 2027-03-21 → 2027-03-27 (+6d) |  | 21d → 30d |
| 7 | **Traffic Signage** | 2027-03-22 → 2027-03-28 (+6d) | 2027-04-13 → 2027-04-19 (+6d) |  |  |
| SDR-2-CON-RW-ZA-1570 | Single post-Traffic signs Installation | 2027-03-22 → 2027-03-28 (+6d) | 2027-04-13 → 2027-04-19 (+6d) |  | 21d → 30d |
| 3 | **ROAD WORKS IN ( PH2-A-MCB0 )** |  | 2027-04-06 → 2027-04-13 (+7d) |  |  |
| 11 | **Subgrade** |  | 2026-10-12 → 2026-10-19 (+7d) |  |  |
| SDR-2-CON-RW-ZA-1600 | Subgrade layer works |  | 2026-10-12 → 2026-10-19 (+7d) | 30% → 40% | 14d → 8d |
| 9 | **Earth Works Plot** |  | 2026-10-12 → 2026-10-19 (+7d) |  |  |
| SDR-2-CON-RW-ZA-1610 | Plot Excavation for cuttings (all types of soil) |  | 2026-10-12 → 2026-10-19 (+7d) |  | 37d → 31d |
| SDR-2-CON-RW-ZA-1620 | Embankments to the Plot 2 Layer |  | 2026-10-12 → 2026-10-19 (+7d) |  | 140d → 134d |
| 8 | **Demolition Work** | 2026-11-05 → 2026-11-12 (+7d) | 2026-11-08 → 2026-11-15 (+7d) |  |  |
| SDR-2-CON-RW-ZA-1640 | Milling of wearing course | 2026-11-05 → 2026-11-12 (+7d) | 2026-11-08 → 2026-11-15 (+7d) |  | 14d → 8d |
| 2 | **Base Course** | 2026-10-13 → 2026-10-20 (+7d) | 2026-11-04 → 2026-11-11 (+7d) |  |  |
| SDR-2-CON-RW-ZA-1630 | Aggregate base course layer | 2026-10-13 → 2026-10-20 (+7d) | 2026-11-04 → 2026-11-11 (+7d) |  | 14d → 8d |
| 3 | **Asphalt Works** | 2026-11-09 → 2026-11-16 (+7d) | 2026-12-16 → 2026-12-23 (+7d) |  |  |
| SDR-2-CON-RW-ZA-1650 | Asphalt works 1st Layer with MC-01 | 2026-11-09 → 2026-11-16 (+7d) | 2026-12-02 → 2026-12-09 (+7d) |  | 14d → 8d |
| SDR-2-CON-RW-ZA-1660 | Asphalt works 2nd layer with RC-02 | 2026-12-03 → 2026-12-10 (+7d) | 2026-12-16 → 2026-12-23 (+7d) |  | 14d → 8d |
| 4 | **Kerbstone Installation** | 2026-10-13 → 2026-10-20 (+7d) | 2027-01-09 → 2027-01-16 (+7d) |  |  |
| SDR-2-CON-RW-ZA-3430 | Kerbstone Installation "all Types" Part 1 | 2026-10-13 → 2026-10-20 (+7d) | 2026-11-04 → 2026-11-11 (+7d) |  | 50d → 44d |
| SDR-2-CON-RW-ZA-1670 | Kerbstone Installation "all Types" Part 2 | 2026-12-17 → 2026-12-24 (+7d) | 2027-01-09 → 2027-01-16 (+7d) |  | 14d → 8d |
| 5 | **Interlock Installation** | 2027-01-10 → 2027-01-17 (+7d) | 2027-02-02 → 2027-02-09 (+7d) |  |  |
| SDR-2-CON-RW-ZA-1680 | Interlock Installation | 2027-01-10 → 2027-01-17 (+7d) | 2027-02-02 → 2027-02-09 (+7d) |  | 14d → 8d |

| ID | Task | Start | Finish | Complete | Total float |
| --- | --- | --- | --- | --- | --- |
| 6 | **Road Marking** | 2027-02-03 → 2027-02-10 (+7d) | 2027-03-14 → 2027-03-21 (+7d) |  |  |
| SDR-2-CON-RW-ZA-1690 | Retroreflective Thermoplastic White Traffic lines | 2027-02-03 → 2027-02-10 (+7d) | 2027-02-20 → 2027-02-28 (+8d) |  | 14d → 8d |
| SDR-2-CON-RW-ZA-1700 | Retroreflective Thermoplastic Yellow, Traffic lines | 2027-02-21 → 2027-03-01 (+8d) | 2027-03-14 → 2027-03-21 (+7d) |  | 14d → 8d |
| 7 | **Traffic Signage** | 2027-03-15 → 2027-03-22 (+7d) | 2027-04-06 → 2027-04-13 (+7d) |  |  |
| SDR-2-CON-RW-ZA-1710 | Single post-Traffic signs Installation | 2027-03-15 → 2027-03-22 (+7d) | 2027-04-06 → 2027-04-13 (+7d) |  | 14d → 8d |
| 7 | **ROAD WORKS IN ( PH2-A-MCC0 )** |  | 2027-04-14 → 2027-04-21 (+7d) |  |  |
| SDR-2-CON-RW-ZA-1750 | Plot Excavation for cuttings (all types of soil) |  | 2026-10-12 → 2026-10-19 (+7d) |  | 62d → 76d |
| SDR-2-CON-RW-ZA-1760 | Embankments to the Plot 2 Layer |  | 2026-10-13 → 2026-10-20 (+7d) |  | 117d → 111d |
| SDR-2-CON-RW-ZA-1770 | Aggregate base course layer |  | 2026-10-14 A | 95% → 100% | 52d → none |
| 8 | **Demolition Work** |  | 2026-10-18 → 2026-10-19 (+1d) |  |  |
| SDR-2-CON-RW-ZA-1780 | Milling of wearing course | 2026-10-15 A | 2026-10-18 → 2026-10-19 A (+1d) | 0% → 100% | 52d → none |
| 3 | **Asphalt Works** | 2026-11-25 → 2026-12-02 (+7d) | 2026-12-26 → 2027-01-02 (+7d) |  |  |
| SDR-2-CON-RW-ZA-1790 | Asphalt works 1st Layer with MC-01 | 2026-11-25 → 2026-12-02 (+7d) | 2026-12-13 → 2026-12-20 (+7d) |  | 20d → 28d |
| SDR-2-CON-RW-ZA-1800 | Asphalt works 2nd layer with RC-02 | 2026-12-14 → 2026-12-21 (+7d) | 2026-12-26 → 2027-01-02 (+7d) |  | 20d → 28d |
| 4 | **Kerbstone Installation** | 2026-10-12 → 2026-10-19 (+7d) | 2027-01-18 → 2027-01-25 (+7d) |  |  |
| SDR-2-CON-RW-ZA-3450 | Kerbstone Installation "all Types" Part 1 | 2026-10-12 → 2026-10-19 (+7d) | 2026-11-01 → 2026-11-08 (+7d) |  | 68d → 76d |
| SDR-2-CON-RW-ZA-1810 | Kerbstone Installation "all Types" Part 2 | 2026-12-27 → 2027-01-03 (+7d) | 2027-01-18 → 2027-01-25 (+7d) |  | 20d → 28d |
| 5 | **Interlock Installation** | 2027-01-19 → 2027-01-26 (+7d) | 2027-02-11 → 2027-02-18 (+7d) |  |  |
| SDR-2-CON-RW-ZA-1820 | Interlock Installation | 2027-01-19 → 2027-01-26 (+7d) | 2027-02-11 → 2027-02-18 (+7d) |  | 20d → 28d |
| 6 | **Road Marking** | 2027-02-13 → 2027-02-20 (+7d) | 2027-03-22 → 2027-03-29 (+7d) |  |  |
| SDR-2-CON-RW-ZA-1830 | Retroreflective Thermoplastic White Traffic lines | 2027-02-13 → 2027-02-20 (+7d) | 2027-03-01 → 2027-03-08 (+7d) |  | 20d → 28d |
| SDR-2-CON-RW-ZA-1840 | Retroreflective Thermoplastic Yellow, Traffic lines | 2027-03-02 → 2027-03-14 (+12d) | 2027-03-22 → 2027-03-29 (+7d) |  | 20d → 28d |
| 7 | **Traffic Signage** | 2027-03-23 → 2027-03-30 (+7d) | 2027-04-14 → 2027-04-21 (+7d) |  |  |
| SDR-2-CON-RW-ZA-1850 | Single post-Traffic signs Installation | 2027-03-23 → 2027-03-30 (+7d) | 2027-04-14 → 2027-04-21 (+7d) |  | 20d → 28d |
| 4 | **ROAD WORKS IN ( PH2-A-MCD0 )** |  | 2027-04-17 → 2027-04-24 (+7d) |  |  |
| 9 | **Earth Works Plot** |  | 2026-10-12 → 2026-10-17 (+5d) |  |  |
| SDR-2-CON-RW-ZA-1890 | Plot Excavation for cuttings (all types of soil) |  | 2026-10-12 → 2026-10-15 A (+3d) | 75% → 100% | 57d → none |
| SDR-2-CON-RW-ZA-1900 | Embankments to the Plot 2 Layer |  | 2026-10-12 → 2026-10-17 A (+5d) | 75% → 100% | 105d → none |
| 2 | **Base Course** |  | 2026-10-12 → 2026-10-14 (+2d) |  |  |
| SDR-2-CON-RW-ZA-1910 | Aggregate base course layer |  | 2026-10-12 → 2026-10-14 A (+2d) | 95% → 100% | 61d → none |
| 8 | **Demolition Work** | 2026-10-13 → 2026-10-14 (+1d) |  |  |  |
| SDR-2-CON-RW-ZA-1920 | Milling of wearing course | 2026-10-13 → 2026-10-14 A (+1d) | 2026-10-19 A | 0% → 100% | 61d → none |
| 3 | **Asphalt Works** | 2026-12-09 → 2026-12-16 (+7d) | 2026-12-27 → 2027-01-03 (+7d) |  |  |
| SDR-2-CON-RW-ZA-1930 | Asphalt works 1st Layer with MC-01 | 2026-12-09 → 2026-12-16 (+7d) | 2026-12-19 → 2026-12-26 (+7d) |  | 18d → 26d |
| SDR-2-CON-RW-ZA-1940 | Asphalt works 2nd layer with RC-02 | 2026-12-20 → 2026-12-27 (+7d) | 2026-12-27 → 2027-01-03 (+7d) |  | 18d → 26d |
| 4 | **Kerbstone Installation** | 2026-10-12 → 2026-10-19 (+7d) | 2027-01-20 → 2027-01-27 (+7d) |  |  |
| SDR-2-CON-RW-ZA-3460 | Kerbstone Installation "all Types" Part 1 | 2026-10-12 → 2026-10-19 (+7d) | 2026-11-01 → 2026-11-08 (+7d) |  | 66d → 74d |
| SDR-2-CON-RW-ZA-1950 | Kerbstone Installation "all Types" Part 2 | 2026-12-28 → 2027-01-04 (+7d) | 2027-01-20 → 2027-01-27 (+7d) |  | 18d → 26d |
| 5 | **Interlock Installation** | 2027-01-21 → 2027-01-28 (+7d) | 2027-02-14 → 2027-02-21 (+7d) |  |  |
| SDR-2-CON-RW-ZA-1960 | Interlock Installation | 2027-01-21 → 2027-01-28 (+7d) | 2027-02-14 → 2027-02-21 (+7d) |  | 18d → 26d |
| 6 | **Road Marking** | 2027-02-15 → 2027-02-23 (+8d) | 2027-03-24 → 2027-03-31 (+7d) |  |  |
| SDR-2-CON-RW-ZA-1970 | Retroreflective Thermoplastic White Traffic lines | 2027-02-15 → 2027-02-23 (+8d) | 2027-03-03 → 2027-03-15 (+12d) |  | 18d → 26d |
| SDR-2-CON-RW-ZA-1980 | Retroreflective Thermoplastic Yellow, Traffic lines | 2027-03-04 → 2027-03-16 (+12d) | 2027-03-24 → 2027-03-31 (+7d) |  | 18d → 26d |
| 7 | **Traffic Signage** | 2027-03-25 → 2027-04-01 (+7d) | 2027-04-17 → 2027-04-24 (+7d) |  |  |
| SDR-2-CON-RW-ZA-1990 | Single post-Traffic signs Installation | 2027-03-25 → 2027-04-01 (+7d) | 2027-04-17 → 2027-04-24 (+7d) |  | 18d → 26d |
| 5 | **ROAD WORKS IN ( PH2-A-MCE0 )** |  | 2027-04-01 → 2027-04-08 (+7d) |  |  |
| 11 | **Subgrade** |  | 2026-11-03 → 2026-11-10 (+7d) |  |  |
| SDR-2-CON-RW-ZA-2020 | Subgrade layer works |  | 2026-11-03 → 2026-11-10 (+7d) | 10% → 20% | 20d → 28d |
| 9 | **Earth Works Plot** |  | 2026-11-03 → 2026-11-10 (+7d) |  |  |
| SDR-2-CON-RW-ZA-3190 | Embankments to the Plot 1 Layer |  | 2026-11-03 → 2026-11-10 (+7d) |  | 78d → 72d |
| SDR-2-CON-RW-ZA-2030 | Plot Excavation for cuttings (all types of soil) |  | 2026-11-03 → 2026-11-10 (+7d) |  | 45d → 53d |
| SDR-2-CON-RW-ZA-2040 | Embankments to the Plot 2 Layer |  | 2026-11-03 → 2026-11-10 (+7d) | 25% → 30% | 78d → 72d |
| 2 | **Base Course** | 2026-11-04 → 2026-11-11 (+7d) | 2026-11-12 → 2026-11-19 (+7d) |  |  |
| SDR-2-CON-RW-ZA-2050 | Aggregate base course layer | 2026-11-04 → 2026-11-11 (+7d) | 2026-11-12 → 2026-11-19 (+7d) |  | 31d → 39d |
| 8 | **Demolition Work** | 2026-11-14 → 2026-11-21 (+7d) | 2026-11-15 → 2026-11-22 (+7d) |  |  |
| SDR-2-CON-RW-ZA-2060 | Milling of wearing course | 2026-11-14 → 2026-11-21 (+7d) | 2026-11-15 → 2026-11-22 (+7d) |  | 31d → 39d |
| 3 | **Asphalt Works** | 2026-11-16 → 2026-11-23 (+7d) | 2026-12-12 → 2026-12-19 (+7d) |  |  |
| SDR-2-CON-RW-ZA-2070 | Asphalt works 1st Layer with MC-01 | 2026-11-16 → 2026-11-23 (+7d) | 2026-11-26 → 2026-12-03 (+7d) |  | 31d → 39d |
| SDR-2-CON-RW-ZA-2080 | Asphalt works 2nd layer with RC-02 | 2026-11-28 → 2026-12-05 (+7d) | 2026-12-12 → 2026-12-19 (+7d) |  | 31d → 39d |
| 4 | **Kerbstone Installation** | 2026-11-04 → 2026-11-11 (+7d) | 2027-01-05 → 2027-01-12 (+7d) |  |  |
| SDR-2-CON-RW-ZA-3470 | Kerbstone Installation "all Types" Part 1 | 2026-11-04 → 2026-11-11 (+7d) | 2026-11-24 → 2026-12-01 (+7d) |  | 20d → 28d |
| SDR-2-CON-RW-ZA-2090 | Kerbstone Installation "all Types" Part 2 | 2026-12-13 → 2026-12-20 (+7d) | 2027-01-05 → 2027-01-12 (+7d) |  | 31d → 39d |
| 5 | **Interlock Installation** | 2027-01-06 → 2027-01-13 (+7d) | 2027-01-30 → 2027-02-06 (+7d) |  |  |
| SDR-2-CON-RW-ZA-2100 | Interlock Installation | 2027-01-06 → 2027-01-13 (+7d) | 2027-01-30 → 2027-02-06 (+7d) |  | 31d → 39d |
| 6 | **Road Marking** | 2027-01-31 → 2027-02-07 (+7d) | 2027-03-04 → 2027-03-16 (+12d) |  |  |
| SDR-2-CON-RW-ZA-2110 | Retroreflective Thermoplastic White Traffic lines | 2027-01-31 → 2027-02-07 (+7d) | 2027-02-15 → 2027-02-23 (+8d) |  | 31d → 39d |
| SDR-2-CON-RW-ZA-2120 | Retroreflective Thermoplastic Yellow, Traffic lines | 2027-02-16 → 2027-02-24 (+8d) | 2027-03-04 → 2027-03-16 (+12d) |  | 31d → 39d |
| 7 | **Traffic Signage** | 2027-03-06 → 2027-03-17 (+11d) | 2027-04-01 → 2027-04-08 (+7d) |  |  |
| SDR-2-CON-RW-ZA-2130 | Single post-Traffic signs Installation | 2027-03-06 → 2027-03-17 (+11d) | 2027-04-01 → 2027-04-08 (+7d) |  | 31d → 39d |
| 6 | **ROAD WORKS IN ( PH2-A-MCF0 )** |  | 2027-04-03 → 2027-04-10 (+7d) |  |  |

| ID | Task | Start | Finish | Complete | Total float |
| --- | --- | --- | --- | --- | --- |
| 11 | **Subgrade** |  | 2026-11-03 → 2026-11-10 (+7d) |  |  |
| SDR-2-CON-RW-ZA-2160 | Subgrade layer works |  | 2026-11-03 → 2026-11-10 (+7d) | 10% → 20% | 30d → 26d |
| 2 | **Base Course** | 2026-11-04 → 2026-11-11 (+7d) | 2026-11-17 → 2026-11-24 (+7d) |  |  |
| SDR-2-CON-RW-ZA-2190 | Aggregate base course layer | 2026-11-04 → 2026-11-11 (+7d) | 2026-11-17 → 2026-11-24 (+7d) |  | 30d → 38d |
| 8 | **Demolition Work** | 2026-11-18 → 2026-11-25 (+7d) | 2026-11-19 → 2026-11-26 (+7d) |  |  |
| SDR-2-CON-RW-ZA-2200 | Milling of wearing course | 2026-11-18 → 2026-11-25 (+7d) | 2026-11-19 → 2026-11-26 (+7d) |  | 30d → 38d |
| 3 | **Asphalt Works** | 2026-11-21 → 2026-11-28 (+7d) | 2026-12-13 → 2026-12-20 (+7d) |  |  |
| SDR-2-CON-RW-ZA-2210 | Asphalt works 1st Layer with MC-01 | 2026-11-21 → 2026-11-28 (+7d) | 2026-11-29 → 2026-12-06 (+7d) |  | 30d → 38d |
| SDR-2-CON-RW-ZA-2220 | Asphalt works 2nd layer with RC-02 | 2026-11-30 → 2026-12-07 (+7d) | 2026-12-13 → 2026-12-20 (+7d) |  | 30d → 38d |
| 4 | **Kerbstone Installation** | 2026-11-04 → 2026-11-11 (+7d) | 2027-01-06 → 2027-01-13 (+7d) |  |  |
| SDR-2-CON-RW-ZA-3480 | Kerbstone Installation "all Types" Part 1 | 2026-11-04 → 2026-11-11 (+7d) | 2026-11-24 → 2026-12-01 (+7d) |  | 30d → 26d |
| SDR-2-CON-RW-ZA-2230 | Kerbstone Installation "all Types" Part 2 | 2026-12-14 → 2026-12-21 (+7d) | 2027-01-06 → 2027-01-13 (+7d) |  | 30d → 38d |
| 5 | **Interlock Installation** | 2027-01-07 → 2027-01-14 (+7d) | 2027-01-31 → 2027-02-07 (+7d) |  |  |
| SDR-2-CON-RW-ZA-2240 | Interlock Installation | 2027-01-07 → 2027-01-14 (+7d) | 2027-01-31 → 2027-02-07 (+7d) |  | 30d → 38d |
| 6 | **Road Marking** | 2027-02-01 → 2027-02-08 (+7d) | 2027-03-06 → 2027-03-17 (+11d) |  |  |
| SDR-2-CON-RW-ZA-2250 | Retroreflective Thermoplastic White Traffic lines | 2027-02-01 → 2027-02-08 (+7d) | 2027-02-16 → 2027-02-24 (+8d) |  | 30d → 38d |
| SDR-2-CON-RW-ZA-2260 | Retroreflective Thermoplastic Yellow, Traffic lines | 2027-02-17 → 2027-02-25 (+8d) | 2027-03-06 → 2027-03-17 (+11d) |  | 30d → 38d |
| 7 | **Traffic Signage** | 2027-03-07 → 2027-03-18 (+11d) | 2027-04-03 → 2027-04-10 (+7d) |  |  |
| SDR-2-CON-RW-ZA-2270 | Single post-Traffic signs Installation | 2027-03-07 → 2027-03-18 (+11d) | 2027-04-03 → 2027-04-10 (+7d) |  | 30d → 38d |
| 9 | **ROAD WORKS IN ( PH2-A-MCG0 )** |  | 2027-03-18 → 2027-03-25 (+7d) |  |  |
| 11 | **Subgrade** |  | 2026-11-01 → 2026-11-08 (+7d) |  |  |
| SDR-2-CON-RW-ZA-2300 | Subgrade layer works |  | 2026-11-01 → 2026-11-08 (+7d) | 10% → 20% | 21d → 15d |
| 9 | **Earth Works Plot** |  | 2026-11-03 → 2026-10-19 (-15d) |  |  |
| SDR-2-CON-RW-ZA-2310 | Plot Excavation for cuttings (all types of soil) |  | 2026-11-01 → 2026-10-17 A (-15d) | 75% → 100% | 54d → none |
| SDR-2-CON-RW-ZA-2320 | Embankments to the Plot 2 Layer |  | 2026-11-03 → 2026-10-19 A (-15d) | 75% → 100% | 120d → none |
| 2 | **Base Course** | 2026-11-02 → 2026-11-09 (+7d) | 2026-11-09 → 2026-11-16 (+7d) |  |  |
| SDR-2-CON-RW-ZA-2330 | Aggregate base course layer | 2026-11-02 → 2026-11-09 (+7d) | 2026-11-09 → 2026-11-16 (+7d) |  | 27d → 21d |
| 8 | **Demolition Work** | 2026-11-10 → 2026-11-17 (+7d) | 2026-11-11 → 2026-11-18 (+7d) |  |  |
| SDR-2-CON-RW-ZA-2340 | Milling of wearing course | 2026-11-10 → 2026-11-17 (+7d) | 2026-11-11 → 2026-11-18 (+7d) |  | 27d → 21d |
| 3 | **Asphalt Works** | 2026-11-12 → 2026-11-19 (+7d) | 2026-11-28 → 2026-12-05 (+7d) |  |  |
| SDR-2-CON-RW-ZA-2350 | Asphalt works 1st Layer with MC-01 | 2026-11-12 → 2026-11-19 (+7d) | 2026-11-15 → 2026-11-22 (+7d) |  | 27d → 21d |
| SDR-2-CON-RW-ZA-2360 | Asphalt works 2nd layer with RC-02 | 2026-11-16 → 2026-11-23 (+7d) | 2026-11-28 → 2026-12-05 (+7d) |  | 42d → 36d |
| 4 | **Kerbstone Installation** | 2026-11-02 → 2026-11-09 (+7d) | 2026-12-22 → 2026-12-29 (+7d) |  |  |
| SDR-2-CON-RW-ZA-3490 | Kerbstone Installation "all Types" Part 1 | 2026-11-02 → 2026-11-09 (+7d) | 2026-11-22 → 2026-11-29 (+7d) |  | 21d → 15d |
| SDR-2-CON-RW-ZA-2370 | Kerbstone Installation "all Types" Part 2 | 2026-11-29 → 2026-12-06 (+7d) | 2026-12-22 → 2026-12-29 (+7d) |  | 42d → 36d |
| 5 | **Interlock Installation** | 2026-12-23 → 2026-12-30 (+7d) | 2027-01-16 → 2027-01-23 (+7d) |  |  |
| SDR-2-CON-RW-ZA-2380 | Interlock Installation | 2026-12-23 → 2026-12-30 (+7d) | 2027-01-16 → 2027-01-23 (+7d) |  | 43d → 37d |
| 6 | **Road Marking** | 2027-01-17 → 2027-01-24 (+7d) | 2027-02-17 → 2027-02-25 (+8d) |  |  |
| SDR-2-CON-RW-ZA-2390 | Retroreflective Thermoplastic White Traffic lines | 2027-01-17 → 2027-01-24 (+7d) | 2027-02-01 → 2027-02-08 (+7d) |  | 43d → 37d |
| SDR-2-CON-RW-ZA-2400 | Retroreflective Thermoplastic Yellow, Traffic lines | 2027-02-02 → 2027-02-09 (+7d) | 2027-02-17 → 2027-02-25 (+8d) |  | 43d → 37d |
| 7 | **Traffic Signage** | 2027-02-18 → 2027-02-27 (+9d) | 2027-03-18 → 2027-03-25 (+7d) |  |  |
| SDR-2-CON-RW-ZA-2410 | Single post-Traffic signs Installation | 2027-02-18 → 2027-02-27 (+9d) | 2027-03-18 → 2027-03-25 (+7d) |  | 43d → 37d |
| 10 | **ROAD WORKS IN ( PH2-A-MCH0 )** |  | 2027-03-28 → 2027-04-04 (+7d) |  |  |
| 11 | **Subgrade** |  | 2026-10-20 → 2026-10-27 (+7d) |  |  |
| SDR-2-CON-RW-ZA-2440 | Subgrade layer works |  | 2026-10-20 → 2026-10-27 (+7d) | 10% → 20% | 20d → 14d |
| 9 | **Earth Works Plot** |  | 2026-11-05 → 2026-11-12 (+7d) |  |  |
| SDR-2-CON-RW-ZA-3310 | Embankments to the Plot 1 Layer |  | 2026-10-12 → 2026-10-19 (+7d) |  | 51d → 45d |
| SDR-2-CON-RW-ZA-2460 | Embankments to the Plot 2 Layer |  | 2026-11-05 → 2026-11-12 (+7d) | 25% → 30% | 51d → 45d |
| 2 | **Base Course** | 2026-10-21 → 2026-10-28 (+7d) | 2026-11-07 → 2026-11-14 (+7d) |  |  |
| SDR-2-CON-RW-ZA-2470 | Aggregate base course layer | 2026-10-21 → 2026-10-28 (+7d) | 2026-11-07 → 2026-11-14 (+7d) |  | 21d → 15d |
| 8 | **Demolition Work** | 2026-11-08 → 2026-11-15 (+7d) | 2026-11-09 → 2026-11-16 (+7d) |  |  |
| SDR-2-CON-RW-ZA-2480 | Milling of wearing course | 2026-11-08 → 2026-11-15 (+7d) | 2026-11-09 → 2026-11-16 (+7d) |  | 21d → 15d |
| 3 | **Asphalt Works** | 2026-11-11 → 2026-11-18 (+7d) | 2026-12-07 → 2026-12-14 (+7d) |  |  |
| SDR-2-CON-RW-ZA-2490 | Asphalt works 1st Layer with MC-01 | 2026-11-11 → 2026-11-18 (+7d) | 2026-11-24 → 2026-12-01 (+7d) |  | 20d → 14d |
| SDR-2-CON-RW-ZA-2500 | Asphalt works 2nd layer with RC-02 | 2026-11-25 → 2026-12-02 (+7d) | 2026-12-07 → 2026-12-14 (+7d) |  | 20d → 14d |
| 4 | **Kerbstone Installation** | 2026-10-21 → 2026-10-28 (+7d) | 2026-12-31 → 2027-01-07 (+7d) |  |  |
| SDR-2-CON-RW-ZA-3500 | Kerbstone Installation "all Types" Part 1 | 2026-10-21 → 2026-10-28 (+7d) | 2026-11-10 → 2026-11-17 (+7d) |  | 20d → 14d |
| SDR-2-CON-RW-ZA-2510 | Kerbstone Installation "all Types" Part 2 | 2026-12-08 → 2026-12-15 (+7d) | 2026-12-31 → 2027-01-07 (+7d) |  | 20d → 14d |
| 5 | **Interlock Installation** | 2027-01-02 → 2027-01-09 (+7d) | 2027-01-25 → 2027-02-01 (+7d) |  |  |
| SDR-2-CON-RW-ZA-2520 | Interlock Installation | 2027-01-02 → 2027-01-09 (+7d) | 2027-01-25 → 2027-02-01 (+7d) |  | 28d → 22d |
| 6 | **Road Marking** | 2027-01-26 → 2027-02-02 (+7d) | 2027-02-28 → 2027-03-07 (+7d) |  |  |
| SDR-2-CON-RW-ZA-2530 | Retroreflective Thermoplastic White Traffic lines | 2027-01-26 → 2027-02-02 (+7d) | 2027-02-10 → 2027-02-17 (+7d) |  | 28d → 22d |
| SDR-2-CON-RW-ZA-2540 | Retroreflective Thermoplastic Yellow, Traffic lines | 2027-02-11 → 2027-02-18 (+7d) | 2027-02-28 → 2027-03-07 (+7d) |  | 28d → 22d |
| 7 | **Traffic Signage** | 2027-03-01 → 2027-03-08 (+7d) | 2027-03-28 → 2027-04-04 (+7d) |  |  |
| SDR-2-CON-RW-ZA-2550 | Single post-Traffic signs Installation | 2027-03-01 → 2027-03-08 (+7d) | 2027-03-28 → 2027-04-04 (+7d) |  | 28d → 22d |
| 11 | **ROAD WORKS IN ( PH2-ART-MC00 )** |  | 2027-02-23 → 2027-02-21 (-2d) |  |  |
| 8 | **Demolition Work** | 2026-10-12 → 2026-10-06 (-6d) | 2026-10-13 → 2026-10-12 (-1d) |  |  |
| SDR-2-CON-RW-ZA-2620 | Milling of wearing course | 2026-10-12 → 2026-10-06 A (-6d) | 2026-10-13 → 2026-10-12 A (-1d) | 0% → 100% | 27d → none |
| 3 | **Asphalt Works** | 2026-10-14 → 2026-10-13 (-1d) | 2026-11-09 → 2026-10-31 (-9d) |  |  |
| SDR-2-CON-RW-ZA-2630 | Asphalt works 1st Layer with MC-01 | 2026-10-14 → 2026-10-13 A (-1d) | 2026-10-27 → 2026-10-19 A (-8d) | 0% → 100% | 27d → none |

| ID | Task | Start | Finish | Complete | Total float |
| --- | --- | --- | --- | --- | --- |
| SDR-2-CON-RW-ZA-2640 | Asphalt works 2nd layer with RC-02 | 2026-10-28 → 2026-10-19 (-9d) | 2026-11-09 → 2026-10-31 (-9d) |  | 27d → 35d |
| 4 | **Kerbstone Installation** | 2026-10-12 → 2026-10-19 (+7d) | 2026-12-03 → 2026-12-02 (-1d) |  |  |
| SDR-2-CON-RW-ZA-3510 | Kerbstone Installation "all Types" Part 1 | 2026-10-12 → 2026-10-19 (+7d) | 2026-11-01 → 2026-11-08 (+7d) |  | 34d → 28d |
| SDR-2-CON-RW-ZA-2650 | Kerbstone Installation "all Types" Part 2 | 2026-11-10 → 2026-11-09 (-1d) | 2026-12-03 → 2026-12-02 (-1d) |  | 27d → 28d |
| 5 | **Interlock Installation** | 2026-12-05 → 2026-12-03 (-2d) | 2026-12-28 → 2026-12-27 (-1d) |  |  |
| SDR-2-CON-RW-ZA-2660 | Interlock Installation | 2026-12-05 → 2026-12-03 (-2d) | 2026-12-28 → 2026-12-27 (-1d) |  | 27d → 28d |
| 6 | **Road Marking** | 2026-12-29 → 2026-12-28 (-1d) | 2027-02-03 → 2027-02-02 (-1d) |  |  |
| SDR-2-CON-RW-ZA-2670 | Retroreflective Thermoplastic White Traffic lines | 2026-12-29 → 2026-12-28 (-1d) | 2027-01-17 → 2027-01-16 (-1d) |  | 27d → 28d |
| SDR-2-CON-RW-ZA-2680 | Retroreflective Thermoplastic Yellow, Traffic lines | 2027-01-18 → 2027-01-17 (-1d) | 2027-02-03 → 2027-02-02 (-1d) |  | 27d → 28d |
| 7 | **Traffic Signage** | 2027-02-04 → 2027-02-03 (-1d) | 2027-02-23 → 2027-02-21 (-2d) |  |  |
| SDR-2-CON-RW-ZA-2690 | Single post-Traffic signs Installation | 2027-02-04 → 2027-02-03 (-1d) | 2027-02-23 → 2027-02-21 (-2d) |  | 27d → 28d |
| 12 | **ROAD WORKS IN ( PH2-ART-MC10 )** |  | 2027-03-29 → 2027-03-22 (-7d) |  |  |
| 11 | **Subgrade** |  | 2026-10-25 → 2026-10-12 (-13d) |  |  |
| SDR-2-CON-RW-ZA-2720 | Subgrade layer works |  | 2026-10-25 → 2026-10-12 A (-13d) | 90% → 100% | 34d → none |
| 2 | **Base Course** | 2026-10-26 → 2026-10-15 (-11d) | 2026-11-07 → 2026-10-31 (-7d) |  |  |
| SDR-2-CON-RW-ZA-2750 | Aggregate base course layer | 2026-10-26 → 2026-10-15 A (-11d) | 2026-11-07 → 2026-10-31 (-7d) | 0% → 50% | 34d → 54d |
| 8 | **Demolition Work** | 2026-11-08 → 2026-11-01 (-7d) | 2026-11-09 → 2026-11-02 (-7d) |  |  |
| SDR-2-CON-RW-ZA-2760 | Milling of wearing course | 2026-11-08 → 2026-11-01 (-7d) | 2026-11-09 → 2026-11-02 (-7d) |  | 34d → 54d |
| 3 | **Asphalt Works** | 2026-11-10 → 2026-11-03 (-7d) | 2026-12-31 → 2026-12-24 (-7d) |  |  |
| SDR-2-CON-RW-ZA-2770 | Asphalt works 1st Layer with MC-01 | 2026-11-10 → 2026-11-03 (-7d) | 2026-11-21 → 2026-11-14 (-7d) |  | 34d → 54d |
| SDR-2-CON-RW-ZA-2780 | Asphalt works 2nd layer with RC-02 | 2026-11-22 → 2026-11-15 (-7d) | 2026-12-07 → 2026-11-30 (-7d) |  | 34d → 54d |
| SDR-2-CON-RW-ZA-2850 | Asphalt Works 3 rd Layer with RC-02 | 2026-12-08 → 2026-12-01 (-7d) | 2026-12-31 → 2026-12-24 (-7d) |  | 34d → 54d |
| 4 | **Kerbstone Installation** | 2026-10-26 → 2026-10-19 (-7d) | 2027-01-25 → 2027-01-18 (-7d) |  |  |
| SDR-2-CON-RW-ZA-3520 | Kerbstone Installation "all Types" Part 1 | 2026-10-26 → 2026-10-19 (-7d) | 2026-11-15 → 2026-11-08 (-7d) |  | 58d → 64d |
| SDR-2-CON-RW-ZA-2790 | Kerbstone Installation "all Types" Part 2 | 2027-01-02 → 2026-12-26 (-7d) | 2027-01-25 → 2027-01-18 (-7d) |  | 34d → 54d |
| 5 | **Interlock Installation** | 2027-01-26 → 2027-01-19 (-7d) | 2027-02-18 → 2027-02-11 (-7d) |  |  |
| SDR-2-CON-RW-ZA-2800 | Interlock Installation | 2027-01-26 → 2027-01-19 (-7d) | 2027-02-18 → 2027-02-11 (-7d) |  | 34d → 54d |
| 6 | **Road Marking** | 2027-02-20 → 2027-02-13 (-7d) | 2027-03-15 → 2027-03-03 (-12d) |  |  |
| SDR-2-CON-RW-ZA-2810 | Retroreflective Thermoplastic White Traffic lines | 2027-02-20 → 2027-02-13 (-7d) | 2027-03-01 → 2027-02-21 (-8d) |  | 34d → 54d |
| SDR-2-CON-RW-ZA-2820 | Retroreflective Thermoplastic Yellow, Traffic lines | 2027-03-02 → 2027-02-23 (-7d) | 2027-03-15 → 2027-03-03 (-12d) |  | 34d → 54d |
| 7 | **Traffic Signage** | 2027-03-16 → 2027-03-04 (-12d) | 2027-03-29 → 2027-03-22 (-7d) |  |  |
| SDR-2-CON-RW-ZA-2830 | Single post-Traffic signs Installation | 2027-03-16 → 2027-03-04 (-12d) | 2027-03-29 → 2027-03-22 (-7d) |  | 34d → 54d |
| ZG | **ZONE G** |  | 2027-04-12 → 2027-04-17 (+5d) |  |  |
| 5 | **ROAD WORKS IN ( PH2-COL-MC50 )** |  | 2027-04-10 → 2027-04-17 (+7d) |  |  |
| 9 | **Earth Works Plot** |  | 2026-11-15 → 2026-10-19 (-27d) |  |  |
| SDR-2-CON-RW-ZG-1050 | Plot Excavation for cuttings (all types of soil) |  | 2026-10-12 A | 80% → 100% | 61d → none |
| SDR-2-CON-RW-ZG-2260 | Embankments to the Plot 2 Layer |  | 2026-11-15 → 2026-10-14 A (-32d) | 90% → 100% | 58d → none |
| SDR-2-CON-RW-ZG-1060 | Embankments to the Plot 3 Layer |  | 2026-11-15 → 2026-10-19 A (-27d) | 60% → 100% | 58d → none |
| 8 | **Demolition Work** | 2026-10-12 → 2026-10-19 (+7d) | 2026-11-03 → 2026-11-10 (+7d) |  |  |
| SDR-2-CON-RW-ZG-1080 | Removal of curbstone | 2026-10-12 → 2026-10-19 (+7d) | 2026-10-24 → 2026-10-31 (+7d) |  | 1d → 0d |
| SDR-2-CON-RW-ZG-1090 | Milling of wearing course | 2026-10-25 → 2026-11-01 (+7d) | 2026-11-03 → 2026-11-10 (+7d) |  | 1d → 0d |
| 3 | **Asphalt Works** |  | 2026-12-20 → 2026-12-27 (+7d) |  |  |
| SDR-2-CON-RW-ZG-1100 | Asphalt works 1st Layer with MC-01 |  | 2026-11-25 → 2026-12-02 (+7d) |  | 1d → 0d |
| SDR-2-CON-RW-ZG-1110 | Asphalt works 2nd layer with RC-02 | 2026-11-26 → 2026-12-03 (+7d) | 2026-12-20 → 2026-12-27 (+7d) |  | 1d → 0d |
| 4 | **Kerbstone Installation** | 2026-10-12 → 2026-10-19 (+7d) | 2027-01-13 → 2027-01-20 (+7d) |  |  |
| SDR-2-CON-RW-ZG-2550 | Kerbstone Installation "all Types" Part 1 | 2026-10-12 → 2026-10-19 (+7d) | 2026-11-01 → 2026-11-08 (+7d) |  | 3d → 2d |
| SDR-2-CON-RW-ZG-1120 | Kerbstone Installation "all Types" Part 2 | 2026-12-21 → 2026-12-28 (+7d) | 2027-01-13 → 2027-01-20 (+7d) |  | 1d → 10d |
| 5 | **Interlock Installation** | 2027-01-14 → 2027-01-21 (+7d) | 2027-02-07 → 2027-02-14 (+7d) |  |  |
| SDR-2-CON-RW-ZG-1130 | Interlock Installation | 2027-01-14 → 2027-01-21 (+7d) | 2027-02-07 → 2027-02-14 (+7d) |  | 1d → 10d |
| 6 | **Road Marking** | 2027-02-08 → 2027-02-15 (+7d) | 2027-03-17 → 2027-03-24 (+7d) |  |  |
| SDR-2-CON-RW-ZG-1140 | Retroreflective Thermoplastic White Traffic lines | 2027-02-08 → 2027-02-15 (+7d) | 2027-02-24 → 2027-03-03 (+7d) |  | 1d → 10d |
| SDR-2-CON-RW-ZG-1150 | Retroreflective Thermoplastic Yellow, Traffic lines | 2027-02-25 → 2027-03-04 (+7d) | 2027-03-17 → 2027-03-24 (+7d) |  | 1d → 10d |
| 7 | **Traffic Signage** | 2027-03-18 → 2027-03-25 (+7d) | 2027-04-10 → 2027-04-17 (+7d) |  |  |
| SDR-2-CON-RW-ZG-1160 | Single post-Traffic signs Installation | 2027-03-18 → 2027-03-25 (+7d) | 2027-04-10 → 2027-04-17 (+7d) |  | 1d → 10d |
| 1 | **ROAD WORKS IN ( PH2-G-MCA0 )** |  | 2027-02-28 → 2027-03-07 (+7d) |  |  |
| 8 | **Demolition Work** | 2026-10-12 → 2026-10-19 (+7d) | 2026-10-29 → 2026-11-05 (+7d) |  |  |
| SDR-2-CON-RW-ZG-1380 | Removal of curbstone | 2026-10-12 → 2026-10-19 (+7d) | 2026-10-21 → 2026-10-28 (+7d) |  | 42d → 36d |
| SDR-2-CON-RW-ZG-1390 | Milling of wearing course | 2026-10-22 → 2026-10-29 (+7d) | 2026-10-29 → 2026-11-05 (+7d) |  | 42d → 36d |
| 3 | **Asphalt Works** |  | 2026-11-15 → 2026-11-22 (+7d) |  |  |
| SDR-2-CON-RW-ZG-1400 | Asphalt works 1st Layer with MC-01 |  | 2026-10-25 → 2026-11-01 (+7d) | 25% → 50% | 55d → 49d |
| SDR-2-CON-RW-ZG-1410 | Asphalt works 2nd layer with RC-02 | 2026-10-26 → 2026-11-02 (+7d) | 2026-11-15 → 2026-11-22 (+7d) |  | 55d → 49d |
| 4 | **Kerbstone Installation** | 2026-11-02 → 2026-11-09 (+7d) | 2026-12-09 → 2026-12-16 (+7d) |  |  |
| SDR-2-CON-RW-ZG-2570 | Kerbstone Installation "all Types" Part 1 | 2026-11-02 → 2026-11-09 (+7d) | 2026-11-22 → 2026-11-29 (+7d) |  | 28d → 22d |
| SDR-2-CON-RW-ZG-1420 | Kerbstone Installation "all Types" Part 2 | 2026-11-16 → 2026-11-23 (+7d) | 2026-12-09 → 2026-12-16 (+7d) |  | 55d → 49d |
| 5 | **Interlock Installation** | 2026-12-10 → 2026-12-17 (+7d) | 2027-01-02 → 2027-01-09 (+7d) |  |  |
| SDR-2-CON-RW-ZG-1430 | Interlock Installation | 2026-12-10 → 2026-12-17 (+7d) | 2027-01-02 → 2027-01-09 (+7d) |  | 55d → 49d |
| 6 | **Road Marking** | 2027-01-03 → 2027-01-10 (+7d) | 2027-02-03 → 2027-02-10 (+7d) |  |  |
| SDR-2-CON-RW-ZG-1440 | Retroreflective Thermoplastic White Traffic lines | 2027-01-03 → 2027-01-10 (+7d) | 2027-01-18 → 2027-01-25 (+7d) |  | 55d → 49d |
| SDR-2-CON-RW-ZG-1450 | Retroreflective Thermoplastic Yellow, Traffic lines | 2027-01-19 → 2027-01-26 (+7d) | 2027-02-03 → 2027-02-10 (+7d) |  | 55d → 49d |
| 7 | **Traffic Signage** | 2027-02-04 → 2027-02-11 (+7d) | 2027-02-28 → 2027-03-07 (+7d) |  |  |

| ID | Task | Start | Finish | Complete | Total float |
| --- | --- | --- | --- | --- | --- |
| SDR-2-CON-RW-ZG-1460 | Single post-Traffic signs Installation | 2027-02-04 → 2027-02-11 (+7d) | 2027-02-28 → 2027-03-07 (+7d) |  | 55d → 49d |
| 6 | **ROAD WORKS IN ( PH2-ART-MC00 )** |  | 2027-04-12 → 2027-03-22 (-21d) |  |  |
| 8 | **Demolition Work** | 2026-10-12 → 2026-10-05 (-7d) | 2026-11-04 → 2026-10-18 (-17d) |  |  |
| SDR-2-CON-RW-ZG-1230 | Removal of curbstone | 2026-10-12 → 2026-10-05 A (-7d) | 2026-10-20 → 2026-10-15 A (-5d) | 0% → 100% | 22d → none |
| SDR-2-CON-RW-ZG-1240 | Milling of wearing course | 2026-10-21 → 2026-10-13 A (-8d) | 2026-11-04 → 2026-10-18 A (-17d) | 0% → 100% | 22d → none |
| 3 | **Asphalt Works** |  | 2026-12-23 → 2026-12-02 (-21d) |  |  |
| SDR-2-CON-RW-ZG-1250 | Asphalt works 1st Layer with MC-01 |  | 2026-11-29 → 2026-10-19 A (-41d) | 10% → 100% | 22d → none |
| SDR-2-CON-RW-ZG-1260 | Asphalt works 2nd layer with RC-02 | 2026-11-30 → 2026-11-09 (-21d) | 2026-12-23 → 2026-12-02 (-21d) |  | 22d → 54d |
| 4 | **Kerbstone Installation** | 2026-10-12 → 2026-10-19 (+7d) | 2027-01-16 → 2026-12-26 (-21d) |  |  |
| SDR-2-CON-RW-ZG-2560 | Kerbstone Installation "all Types" Part 1 | 2026-10-12 → 2026-10-19 (+7d) | 2026-11-01 → 2026-11-08 (+7d) |  | 28d → 22d |
| SDR-2-CON-RW-ZG-1270 | Kerbstone Installation "all Types" Part 2 | 2026-12-24 → 2026-12-03 (-21d) | 2027-01-16 → 2026-12-26 (-21d) |  | 22d → 54d |
| 5 | **Interlock Installation** | 2027-01-17 → 2026-12-27 (-21d) | 2027-02-09 → 2027-01-19 (-21d) |  |  |
| SDR-2-CON-RW-ZG-1280 | Interlock Installation | 2027-01-17 → 2026-12-27 (-21d) | 2027-02-09 → 2027-01-19 (-21d) |  | 22d → 54d |
| 6 | **Road Marking** | 2027-02-10 → 2027-01-20 (-21d) | 2027-03-20 → 2027-02-21 (-27d) |  |  |
| SDR-2-CON-RW-ZG-1290 | Retroreflective Thermoplastic White Traffic lines | 2027-02-10 → 2027-01-20 (-21d) | 2027-02-27 → 2027-02-04 (-23d) |  | 22d → 54d |
| SDR-2-CON-RW-ZG-1300 | Retroreflective Thermoplastic Yellow, Traffic lines | 2027-02-28 → 2027-02-06 (-22d) | 2027-03-20 → 2027-02-21 (-27d) |  | 22d → 54d |
| 7 | **Traffic Signage** | 2027-03-21 → 2027-02-23 (-26d) | 2027-04-12 → 2027-03-22 (-21d) |  |  |
| SDR-2-CON-RW-ZG-1310 | Single post-Traffic signs Installation | 2027-03-21 → 2027-02-23 (-26d) | 2027-04-12 → 2027-03-22 (-21d) |  | 22d → 54d |
| 8 | **ROAD WORKS IN ( PH2-G-MCE0 )** |  | 2027-04-05 → 2027-04-12 (+7d) |  |  |
| 8 | **Demolition Work** | 2026-10-12 → 2026-10-19 (+7d) | 2026-11-28 → 2026-12-05 (+7d) |  |  |
| SDR-2-CON-RW-ZG-1530 | Removal of curbstone | 2026-10-12 → 2026-10-19 (+7d) | 2026-10-15 → 2026-10-22 (+7d) |  | 60d → 54d |
| SDR-2-CON-RW-ZG-1540 | Milling of wearing course | 2026-11-23 → 2026-11-30 (+7d) | 2026-11-28 → 2026-12-05 (+7d) |  | 28d → 22d |
| 3 | **Asphalt Works** |  | 2026-12-15 → 2026-12-22 (+7d) |  |  |
| SDR-2-CON-RW-ZG-1560 | Asphalt works 2nd layer with RC-02 | 2026-11-29 → 2026-12-06 (+7d) | 2026-12-15 → 2026-12-22 (+7d) |  | 28d → 22d |
| 4 | **Kerbstone Installation** | 2026-10-12 → 2026-10-19 (+7d) | 2027-01-09 → 2027-01-16 (+7d) |  |  |
| SDR-2-CON-RW-ZG-2580 | Kerbstone Installation "all Types" Part 1 | 2026-10-12 → 2026-10-19 (+7d) | 2026-11-01 → 2026-11-08 (+7d) |  | 51d → 50d |
| SDR-2-CON-RW-ZG-1570 | Kerbstone Installation "all Types" Part 2 | 2026-12-16 → 2026-12-23 (+7d) | 2027-01-09 → 2027-01-16 (+7d) |  | 28d → 22d |
| 5 | **Interlock Installation** | 2027-01-10 → 2027-01-17 (+7d) | 2027-02-02 → 2027-02-09 (+7d) |  |  |
| SDR-2-CON-RW-ZG-1580 | Interlock Installation | 2027-01-10 → 2027-01-17 (+7d) | 2027-02-02 → 2027-02-09 (+7d) |  | 28d → 22d |
| 6 | **Road Marking** | 2027-02-03 → 2027-02-10 (+7d) | 2027-03-08 → 2027-03-20 (+12d) |  |  |
| SDR-2-CON-RW-ZG-1590 | Retroreflective Thermoplastic White Traffic lines | 2027-02-03 → 2027-02-10 (+7d) | 2027-02-18 → 2027-02-27 (+9d) |  | 28d → 22d |
| SDR-2-CON-RW-ZG-1600 | Retroreflective Thermoplastic Yellow, Traffic lines | 2027-02-20 → 2027-02-28 (+8d) | 2027-03-08 → 2027-03-20 (+12d) |  | 28d → 22d |
| 7 | **Traffic Signage** | 2027-03-14 → 2027-03-21 (+7d) | 2027-04-05 → 2027-04-12 (+7d) |  |  |
| SDR-2-CON-RW-ZG-1610 | Single post-Traffic signs Installation | 2027-03-14 → 2027-03-21 (+7d) | 2027-04-05 → 2027-04-12 (+7d) |  | 28d → 22d |
| 4 | **ROAD WORKS IN ( PH2-G-MCD0 )** |  | 2027-03-25 → 2027-04-01 (+7d) |  |  |
| 9 | **Earth Works Plot** |  | 2026-11-01 → 2026-11-08 (+7d) |  |  |
| SDR-2-CON-RW-ZG-1650 | Plot Excavation for cuttings (all types of soil) |  | 2026-10-12 → 2026-10-19 (+7d) |  | 68d → 67d |
| SDR-2-CON-RW-ZG-1660 | Embankments to the Plot 2 Layer |  | 2026-11-01 → 2026-11-08 (+7d) |  | 58d → 66d |
| 8 | **Demolition Work** | 2026-10-12 → 2026-10-19 (+7d) | 2026-10-21 → 2026-10-28 (+7d) |  |  |
| SDR-2-CON-RW-ZG-1680 | Removal of curbstone | 2026-10-12 → 2026-10-19 (+7d) | 2026-10-15 → 2026-10-22 (+7d) |  | 34d → 45d |
| SDR-2-CON-RW-ZG-1690 | Milling of wearing course | 2026-10-17 → 2026-10-24 (+7d) | 2026-10-21 → 2026-10-28 (+7d) |  | 34d → 45d |
| 3 | **Asphalt Works** |  | 2026-12-06 → 2026-12-13 (+7d) |  |  |
| SDR-2-CON-RW-ZG-1700 | Asphalt works 1st Layer with MC-01 |  | 2026-11-11 → 2026-11-18 (+7d) | 30% → 90% | 34d → 45d |
| SDR-2-CON-RW-ZG-1710 | Asphalt works 2nd layer with RC-02 | 2026-11-12 → 2026-11-19 (+7d) | 2026-12-06 → 2026-12-13 (+7d) |  | 34d → 45d |
| 4 | **Kerbstone Installation** | 2026-10-12 → 2026-10-19 (+7d) | 2026-12-30 → 2027-01-06 (+7d) |  |  |
| SDR-2-CON-RW-ZG-2590 | Kerbstone Installation "all Types" Part 1 | 2026-10-12 → 2026-10-19 (+7d) | 2026-11-01 → 2026-11-08 (+7d) |  | 23d → 22d |
| SDR-2-CON-RW-ZG-1720 | Kerbstone Installation "all Types" Part 2 | 2026-12-07 → 2026-12-14 (+7d) | 2026-12-30 → 2027-01-06 (+7d) |  | 34d → 45d |
| 5 | **Interlock Installation** | 2026-12-31 → 2027-01-07 (+7d) | 2027-01-23 → 2027-01-30 (+7d) |  |  |
| SDR-2-CON-RW-ZG-1730 | Interlock Installation | 2026-12-31 → 2027-01-07 (+7d) | 2027-01-23 → 2027-01-30 (+7d) |  | 34d → 45d |
| 6 | **Road Marking** | 2027-01-24 → 2027-01-31 (+7d) | 2027-02-25 → 2027-03-04 (+7d) |  |  |
| SDR-2-CON-RW-ZG-1740 | Retroreflective Thermoplastic White Traffic lines | 2027-01-24 → 2027-01-31 (+7d) | 2027-02-08 → 2027-02-15 (+7d) |  | 34d → 45d |
| SDR-2-CON-RW-ZG-1750 | Retroreflective Thermoplastic Yellow, Traffic lines | 2027-02-09 → 2027-02-16 (+7d) | 2027-02-25 → 2027-03-04 (+7d) |  | 34d → 45d |
| 7 | **Traffic Signage** | 2027-02-27 → 2027-03-06 (+7d) | 2027-03-25 → 2027-04-01 (+7d) |  |  |
| SDR-2-CON-RW-ZG-1760 | Single post-Traffic signs Installation | 2027-02-27 → 2027-03-06 (+7d) | 2027-03-25 → 2027-04-01 (+7d) |  | 34d → 45d |
| 2 | **ROAD WORKS IN ( PH2-G-MCF0 )** |  | 2027-03-24 → 2027-03-31 (+7d) |  |  |
| 8 | **Demolition Work** | 2026-10-12 → 2026-10-19 (+7d) | 2026-11-09 → 2026-11-16 (+7d) |  |  |
| SDR-2-CON-RW-ZG-1830 | Removal of curbstone | 2026-10-12 → 2026-10-19 (+7d) | 2026-10-19 → 2026-10-26 (+7d) |  | 34d → 33d |
| SDR-2-CON-RW-ZG-1840 | Milling of wearing course | 2026-11-02 → 2026-11-09 (+7d) | 2026-11-09 → 2026-11-16 (+7d) |  | 23d → 22d |
| 3 | **Asphalt Works** |  | 2026-12-03 → 2026-12-10 (+7d) |  |  |
| SDR-2-CON-RW-ZG-1860 | Asphalt works 2nd layer with RC-02 | 2026-11-10 → 2026-11-17 (+7d) | 2026-12-03 → 2026-12-10 (+7d) |  | 23d → 22d |
| 4 | **Kerbstone Installation** | 2026-10-12 → 2026-10-19 (+7d) | 2026-12-28 → 2027-01-04 (+7d) |  |  |
| SDR-2-CON-RW-ZG-2600 | Kerbstone Installation "all Types" Part 1 | 2026-10-12 → 2026-10-19 (+7d) | 2026-11-01 → 2026-11-08 (+7d) |  | 21d → 20d |
| SDR-2-CON-RW-ZG-1870 | Kerbstone Installation "all Types" Part 2 | 2026-12-05 → 2026-12-12 (+7d) | 2026-12-28 → 2027-01-04 (+7d) |  | 23d → 22d |
| 5 | **Interlock Installation** | 2026-12-29 → 2027-01-05 (+7d) | 2027-01-21 → 2027-01-28 (+7d) |  |  |
| SDR-2-CON-RW-ZG-1880 | Interlock Installation | 2026-12-29 → 2027-01-05 (+7d) | 2027-01-21 → 2027-01-28 (+7d) |  | 23d → 22d |
| 6 | **Road Marking** | 2027-01-23 → 2027-01-30 (+7d) | 2027-02-24 → 2027-03-03 (+7d) |  |  |
| SDR-2-CON-RW-ZG-1890 | Retroreflective Thermoplastic White Traffic lines | 2027-01-23 → 2027-01-30 (+7d) | 2027-02-07 → 2027-02-14 (+7d) |  | 23d → 22d |
| SDR-2-CON-RW-ZG-1900 | Retroreflective Thermoplastic Yellow, Traffic lines | 2027-02-08 → 2027-02-15 (+7d) | 2027-02-24 → 2027-03-03 (+7d) |  | 23d → 22d |
| 7 | **Traffic Signage** | 2027-02-25 → 2027-03-04 (+7d) | 2027-03-24 → 2027-03-31 (+7d) |  |  |
| SDR-2-CON-RW-ZG-1910 | Single post-Traffic signs Installation | 2027-02-25 → 2027-03-04 (+7d) | 2027-03-24 → 2027-03-31 (+7d) |  | 23d → 22d |

| ID | Task | Start | Finish | Complete | Total float |
| --- | --- | --- | --- | --- | --- |
| 3 | **ROAD WORKS IN ( PH2-G-MCG0 )** |  | 2027-03-27 → 2027-04-03 (+7d) |  |  |
| 9 | **Earth Works Plot** |  | 2026-10-13 → 2026-10-20 (+7d) |  |  |
| SDR-2-CON-RW-ZG-1950 | Plot Excavation for cuttings (all types of soil) |  | 2026-10-12 → 2026-10-19 (+7d) |  | 37d → 36d |
| SDR-2-CON-RW-ZG-2500 | Embankments to the Plot 1 Layer |  | 2026-10-12 → 2026-10-19 (+7d) |  | 55d → 49d |
| SDR-2-CON-RW-ZG-1960 | Embankments to the Plot 2 Layer |  | 2026-10-13 → 2026-10-20 (+7d) |  | 89d → 88d |
| 8 | **Demolition Work** | 2026-10-12 → 2026-10-19 (+7d) | 2026-11-17 → 2026-11-24 (+7d) |  |  |
| SDR-2-CON-RW-ZG-1980 | Removal of curbstone | 2026-10-12 → 2026-10-19 (+7d) | 2026-10-20 → 2026-10-27 (+7d) |  | 37d → 36d |
| SDR-2-CON-RW-ZG-1990 | Milling of wearing course | 2026-11-09 → 2026-11-16 (+7d) | 2026-11-17 → 2026-11-24 (+7d) |  | 21d → 20d |
| 3 | **Asphalt Works** |  | 2026-12-06 → 2026-12-13 (+7d) |  |  |
| SDR-2-CON-RW-ZG-2010 | Asphalt works 2nd layer with RC-02 | 2026-11-18 → 2026-11-25 (+7d) | 2026-12-06 → 2026-12-13 (+7d) |  | 21d → 20d |
| 4 | **Kerbstone Installation** | 2026-10-12 → 2026-10-19 (+7d) | 2026-12-30 → 2027-01-06 (+7d) |  |  |
| SDR-2-CON-RW-ZG-2610 | Kerbstone Installation "all Types" Part 1 | 2026-10-12 → 2026-10-19 (+7d) | 2026-11-01 → 2026-11-08 (+7d) |  | 27d → 26d |
| SDR-2-CON-RW-ZG-2020 | Kerbstone Installation "all Types" Part 2 | 2026-12-07 → 2026-12-14 (+7d) | 2026-12-30 → 2027-01-06 (+7d) |  | 21d → 20d |
| 5 | **Interlock Installation** | 2026-12-31 → 2027-01-07 (+7d) | 2027-01-24 → 2027-01-31 (+7d) |  |  |
| SDR-2-CON-RW-ZG-2030 | Interlock Installation | 2026-12-31 → 2027-01-07 (+7d) | 2027-01-24 → 2027-01-31 (+7d) |  | 21d → 20d |
| 6 | **Road Marking** | 2027-01-25 → 2027-02-01 (+7d) | 2027-02-27 → 2027-03-06 (+7d) |  |  |
| SDR-2-CON-RW-ZG-2040 | Retroreflective Thermoplastic White Traffic lines | 2027-01-25 → 2027-02-01 (+7d) | 2027-02-09 → 2027-02-16 (+7d) |  | 21d → 20d |
| SDR-2-CON-RW-ZG-2050 | Retroreflective Thermoplastic Yellow, Traffic lines | 2027-02-10 → 2027-02-17 (+7d) | 2027-02-27 → 2027-03-06 (+7d) |  | 21d → 20d |
| 7 | **Traffic Signage** | 2027-02-28 → 2027-03-07 (+7d) | 2027-03-27 → 2027-04-03 (+7d) |  |  |
| SDR-2-CON-RW-ZG-2060 | Single post-Traffic signs Installation | 2027-02-28 → 2027-03-07 (+7d) | 2027-03-27 → 2027-04-03 (+7d) |  | 21d → 20d |
| 7 | **ROAD WORKS IN ( PH2-G-MCZ0 )** |  | 2027-02-27 → 2027-03-06 (+7d) |  |  |
| 8 | **Demolition Work** | 2026-10-12 → 2026-10-19 (+7d) | 2026-10-28 → 2026-11-04 (+7d) |  |  |
| SDR-2-CON-RW-ZG-2130 | Removal of curbstone | 2026-10-12 → 2026-10-19 (+7d) | 2026-10-17 → 2026-10-24 (+7d) |  | 41d → 40d |
| SDR-2-CON-RW-ZG-2140 | Milling of wearing course | 2026-10-18 → 2026-10-25 (+7d) | 2026-10-28 → 2026-11-04 (+7d) |  | 41d → 40d |
| 3 | **Asphalt Works** |  | 2026-11-12 → 2026-11-19 (+7d) |  |  |
| SDR-2-CON-RW-ZG-2160 | Asphalt works 2nd layer with RC-02 | 2026-10-29 → 2026-11-05 (+7d) | 2026-11-12 → 2026-11-19 (+7d) |  | 41d → 40d |
| 4 | **Kerbstone Installation** | 2026-10-12 → 2026-10-19 (+7d) | 2026-12-07 → 2026-12-14 (+7d) |  |  |
| SDR-2-CON-RW-ZG-2620 | Kerbstone Installation "all Types" Part 1 | 2026-10-12 → 2026-10-19 (+7d) | 2026-11-01 → 2026-11-08 (+7d) |  | 51d → 50d |
| SDR-2-CON-RW-ZG-2170 | Kerbstone Installation "all Types" Part 2 | 2026-11-14 → 2026-11-21 (+7d) | 2026-12-07 → 2026-12-14 (+7d) |  | 41d → 40d |
| 5 | **Interlock Installation** | 2026-12-08 → 2026-12-15 (+7d) | 2026-12-31 → 2027-01-07 (+7d) |  |  |
| SDR-2-CON-RW-ZG-2180 | Interlock Installation | 2026-12-08 → 2026-12-15 (+7d) | 2026-12-31 → 2027-01-07 (+7d) |  | 41d → 40d |
| 6 | **Road Marking** | 2027-01-02 → 2027-01-09 (+7d) | 2027-02-02 → 2027-02-09 (+7d) |  |  |
| SDR-2-CON-RW-ZG-2190 | Retroreflective Thermoplastic White Traffic lines | 2027-01-02 → 2027-01-09 (+7d) | 2027-01-17 → 2027-01-24 (+7d) |  | 41d → 40d |
| SDR-2-CON-RW-ZG-2200 | Retroreflective Thermoplastic Yellow, Traffic lines | 2027-01-18 → 2027-01-25 (+7d) | 2027-02-02 → 2027-02-09 (+7d) |  | 41d → 40d |
| 7 | **Traffic Signage** | 2027-02-03 → 2027-02-10 (+7d) | 2027-02-27 → 2027-03-06 (+7d) |  |  |
| SDR-2-CON-RW-ZG-2210 | Single post-Traffic signs Installation | 2027-02-03 → 2027-02-10 (+7d) | 2027-02-27 → 2027-03-06 (+7d) |  | 41d → 40d |
| ST | **Storm Water Drainage Network** |  | 2027-05-15 → 2027-05-27 (+12d) |  |  |
| ZA | **ZONE A** |  | 2027-05-15 → 2027-05-27 (+12d) |  |  |
| 11 | **STORM WATER LINE IN ( PH2-A-MCB0 )** |  | 2027-02-14 → 2027-02-21 (+7d) |  |  |
| 8 | **Pipes Works** |  | 2027-01-25 → 2027-02-01 (+7d) |  |  |
| 2 | **Pipes Laying** |  | 2026-12-29 → 2027-01-05 (+7d) |  |  |
| SDR-2-CON-ST-ZA-1090 | Install ST GRP Pipes |  | 2026-12-29 → 2027-01-05 (+7d) | 60% → 62% | 10.1d → 15.1d |
| 6 | **Testing** | 2026-12-29 → 2027-01-05 (+7d) | 2027-01-23 → 2027-01-30 (+7d) |  |  |
| SDR-2-CON-ST-ZA-3440 | Testing ST GRP Pipes | 2026-12-29 → 2027-01-05 (+7d) | 2027-01-23 → 2027-01-30 (+7d) |  | 10.1d → 15.1d |
| 3 | **Backfilling** | 2026-12-31 → 2027-01-07 (+7d) | 2027-01-25 → 2027-02-01 (+7d) |  |  |
| SDR-2-CON-ST-ZA-1140 | Backfilling ST GRP Pipes | 2026-12-31 → 2027-01-07 (+7d) | 2027-01-25 → 2027-02-01 (+7d) |  | 10.1d → 15.1d |
| 4 | **Manholes** |  | 2027-02-02 → 2027-02-09 (+7d) |  |  |
| 1 | **Excavation** |  | 2026-12-01 → 2026-12-07 (+6d) |  |  |
| SDR-2-CON-ST-ZA-1210 | Excavation Manholes Section 3 |  | 2026-12-01 → 2026-12-07 (+6d) |  | 10d → 16d |
| 2 | **bedding Works** |  | 2026-12-09 → 2026-12-16 (+7d) |  |  |
| SDR-2-CON-ST-ZA-3520 | Sand bedding for Manholes |  | 2026-12-09 → 2026-12-16 (+7d) |  | 3d → 8d |
| 3 | **Install Manholes** |  | 2026-12-09 → 2026-12-16 (+7d) |  |  |
| SDR-2-CON-ST-ZA-3600 | Manholes Installation |  | 2026-12-09 → 2026-12-16 (+7d) |  | 3d → 8d |
| 4 | **Testing** | 2026-12-16 → 2026-12-23 (+7d) | 2027-01-09 → 2027-01-16 (+7d) |  |  |
| SDR-2-CON-ST-ZA-3680 | Testing for Manholes | 2026-12-16 → 2026-12-23 (+7d) | 2027-01-09 → 2027-01-16 (+7d) |  | 3d → 8d |
| 5 | **Backfilling** | 2027-01-10 → 2027-01-17 (+7d) | 2027-02-02 → 2027-02-09 (+7d) |  |  |
| SDR-2-CON-ST-ZA-3760 | Backfilling for Manholes | 2027-01-10 → 2027-01-17 (+7d) | 2027-02-02 → 2027-02-09 (+7d) |  | 3d → 8d |
| 5 | **Catch basin** |  | 2027-02-14 → 2027-02-21 (+7d) |  |  |
| 1 | **Excavation** |  | 2026-11-05 → 2026-11-12 (+7d) |  |  |
| SDR-2-CON-ST-ZA-6930 | Excavation for Catch basin Section 1 |  | 2026-10-12 → 2026-10-19 (+7d) |  | 100d → 99d |
| SDR-2-CON-ST-ZA-1300 | Excavation for Catch basin Section 2 | 2026-10-13 → 2026-10-20 (+7d) | 2026-11-05 → 2026-11-12 (+7d) |  | 100d → 99d |
| 2 | **bedding Works** | 2026-11-07 → 2026-11-14 (+7d) | 2026-11-30 → 2026-12-07 (+7d) |  |  |
| SDR-2-CON-ST-ZA-3840 | Sand Dedding for Catch basin | 2026-11-07 → 2026-11-14 (+7d) | 2026-11-30 → 2026-12-07 (+7d) |  | 100d → 99d |
| 3 | **Install Catch basin** | 2026-12-01 → 2026-12-08 (+7d) | 2026-12-24 → 2026-12-31 (+7d) |  |  |
| SDR-2-CON-ST-ZA-3900 | Install Catch basin | 2026-12-01 → 2026-12-08 (+7d) | 2026-12-24 → 2026-12-31 (+7d) |  | 100d → 99d |
| 4 | **Testing** | 2026-12-01 → 2026-12-23 (+22d) | 2026-12-24 → 2027-01-16 (+23d) |  |  |
| SDR-2-CON-ST-ZA-3960 | Testing for Catch basin pipe | 2026-12-01 → 2026-12-23 (+22d) | 2026-12-24 → 2027-01-16 (+23d) |  | 100d → 86d |
| 5 | **Backfilling** | 2026-12-01 → 2026-12-23 (+22d) | 2027-02-14 → 2027-02-21 (+7d) |  |  |
| SDR-2-CON-ST-ZA-6940 | Backfilling for Catch basin Section 1 | 2026-12-01 → 2026-12-23 (+22d) | 2026-12-13 → 2027-01-04 (+22d) |  | 112d → 93d |
| SDR-2-CON-ST-ZA-4020 | Backfilling for Catch basin Section 2 | 2027-02-03 → 2027-02-10 (+7d) | 2027-02-14 → 2027-02-21 (+7d) |  | 66d → 60d |

| ID | Task | Start | Finish | Complete | Total float |
| --- | --- | --- | --- | --- | --- |
| 12 | **STORM WATER LINE IN ( PH2-A-MCD0 )** |  | 2027-05-05 → 2027-04-14 (-21d) |  |  |
| 8 | **Pipes Works** |  | 2026-11-30 → 2026-12-07 (+7d) |  |  |
| 7 | **bedding Works** |  | 2026-10-12 → 2026-10-19 (+7d) |  |  |
| SDR-2-CON-ST-ZA-4090 | Sand bedding for GRP Pipes |  | 2026-10-12 → 2026-10-19 (+7d) |  | 56d → 61d |
| 2 | **Pipes Laying** |  | 2026-10-12 → 2026-10-19 (+7d) |  |  |
| SDR-2-CON-ST-ZA-4040 | Install ST GRP Pipes |  | 2026-10-12 → 2026-10-19 (+7d) |  | 56d → 61d |
| 6 | **Testing** | 2026-10-13 → 2026-10-20 (+7d) | 2026-11-05 → 2026-11-12 (+7d) |  |  |
| SDR-2-CON-ST-ZA-4080 | Testing ST GRP Pipes | 2026-10-13 → 2026-10-20 (+7d) | 2026-11-05 → 2026-11-12 (+7d) |  | 56d → 61d |
| 3 | **Backfilling** | 2026-11-07 → 2026-11-14 (+7d) | 2026-11-30 → 2026-12-07 (+7d) |  |  |
| SDR-2-CON-ST-ZA-4050 | Backfilling ST GRP Pipes | 2026-11-07 → 2026-11-14 (+7d) | 2026-11-30 → 2026-12-07 (+7d) |  | 56d → 61d |
| 4 | **Manholes** |  | 2026-12-01 → 2026-12-08 (+7d) |  |  |
| 2 | **bedding Works** |  | 2026-10-12 → 2026-10-19 (+7d) |  |  |
| SDR-2-CON-ST-ZA-4100 | Sand bedding for Manholes |  | 2026-10-12 → 2026-10-19 (+7d) |  | 85.91d → 97.91d |
| 3 | **Install Manholes** |  | 2026-10-13 → 2026-10-20 (+7d) |  |  |
| SDR-2-CON-ST-ZA-4110 | Manholes Installation |  | 2026-10-13 → 2026-10-20 (+7d) |  | 84d → 96d |
| 4 | **Testing** | 2026-10-14 → 2026-10-21 (+7d) | 2026-11-07 → 2026-11-14 (+7d) |  |  |
| SDR-2-CON-ST-ZA-4120 | Testing for Manholes | 2026-10-14 → 2026-10-21 (+7d) | 2026-11-07 → 2026-11-14 (+7d) |  | 84d → 96d |
| 5 | **Backfilling** | 2026-11-08 → 2026-11-15 (+7d) | 2026-12-01 → 2026-12-08 (+7d) |  |  |
| SDR-2-CON-ST-ZA-4130 | Backfilling for Manholes | 2026-11-08 → 2026-11-15 (+7d) | 2026-12-01 → 2026-12-08 (+7d) |  | 84d → 96d |
| 5 | **Catch basin** |  | 2027-05-05 → 2027-04-14 (-21d) |  |  |
| 1 | **Excavation** |  | 2026-11-29 → 2026-12-06 (+7d) |  |  |
| SDR-2-CON-ST-ZA-6970 | Excavation for Catch basin Section 1 |  | 2026-10-13 → 2026-10-20 (+7d) |  | 115d → 109d |
| SDR-2-CON-ST-ZA-6410 | Excavation for Catch basin Section 2 | 2026-10-14 → 2026-10-21 (+7d) | 2026-11-07 → 2026-11-14 (+7d) |  | 115d → 109d |
| SDR-2-CON-ST-ZA-4070 | Excavation for Catch basin Section 3 | 2026-11-08 → 2026-11-15 (+7d) | 2026-11-29 → 2026-12-06 (+7d) |  | 115d → 109d |
| 2 | **bedding Works** | 2026-12-29 → 2027-01-05 (+7d) | 2027-01-21 → 2027-01-28 (+7d) |  |  |
| SDR-2-CON-ST-ZA-4140 | Sand Dedding for Catch basin | 2026-12-29 → 2027-01-05 (+7d) | 2027-01-21 → 2027-01-28 (+7d) |  | 90d → 84d |
| 3 | **Install Catch basin** | 2027-01-23 → 2027-01-30 (+7d) | 2027-02-15 → 2027-02-23 (+8d) |  |  |
| SDR-2-CON-ST-ZA-4150 | Install Catch basin | 2027-01-23 → 2027-01-30 (+7d) | 2027-02-15 → 2027-02-23 (+8d) |  | 90d → 84d |
| 4 | **Testing** | 2027-04-13 → 2027-03-23 (-21d) | 2027-04-24 → 2027-04-03 (-21d) |  |  |
| SDR-2-CON-ST-ZA-4160 | Testing for Catch basin pipe | 2027-04-13 → 2027-03-23 (-21d) | 2027-04-24 → 2027-04-03 (-21d) |  | 47d → 65d |
| 5 | **Backfilling** | 2027-04-25 → 2027-04-04 (-21d) | 2027-05-05 → 2027-04-14 (-21d) |  |  |
| SDR-2-CON-ST-ZA-4170 | Backfilling for Catch basin | 2027-04-25 → 2027-04-04 (-21d) | 2027-05-05 → 2027-04-14 (-21d) |  | 47d → 65d |
| 13 | **STORM WATER LINE IN ( PH2-A-MCE0 )** |  | 2027-03-22 → 2027-03-29 (+7d) |  |  |
| 8 | **Pipes Works** |  | 2026-11-30 → 2026-12-07 (+7d) |  |  |
| 7 | **bedding Works** |  | 2026-10-12 → 2026-10-19 (+7d) |  |  |
| SDR-2-CON-ST-ZA-4240 | Sand bedding for GRP Pipes |  | 2026-10-12 → 2026-10-19 (+7d) |  | 65d → 59d |
| 2 | **Pipes Laying** |  | 2026-10-12 → 2026-10-19 (+7d) |  |  |
| SDR-2-CON-ST-ZA-4190 | Install ST GRP Pipes |  | 2026-10-12 → 2026-10-19 (+7d) |  | 65d → 59d |
| 6 | **Testing** | 2026-10-13 → 2026-10-20 (+7d) | 2026-11-05 → 2026-11-12 (+7d) |  |  |
| SDR-2-CON-ST-ZA-4230 | Testing ST GRP Pipes | 2026-10-13 → 2026-10-20 (+7d) | 2026-11-05 → 2026-11-12 (+7d) |  | 65d → 59d |
| 3 | **Backfilling** | 2026-11-07 → 2026-11-14 (+7d) | 2026-11-30 → 2026-12-07 (+7d) |  |  |
| SDR-2-CON-ST-ZA-4200 | Backfilling ST GRP Pipes | 2026-11-07 → 2026-11-14 (+7d) | 2026-11-30 → 2026-12-07 (+7d) |  | 65d → 59d |
| 4 | **Manholes** |  | 2026-11-30 → 2026-12-07 (+7d) |  |  |
| 2 | **bedding Works** |  | 2026-10-12 → 2026-10-19 (+7d) |  |  |
| SDR-2-CON-ST-ZA-4250 | Sand bedding for Manholes |  | 2026-10-12 → 2026-10-19 (+7d) |  | 71d → 83d |
| 3 | **Install Manholes** |  | 2026-10-12 → 2026-10-19 (+7d) |  |  |
| SDR-2-CON-ST-ZA-4260 | Manholes Installation |  | 2026-10-12 → 2026-10-19 (+7d) |  | 71d → 83d |
| 4 | **Testing** | 2026-10-13 → 2026-10-20 (+7d) | 2026-11-05 → 2026-11-12 (+7d) |  |  |
| SDR-2-CON-ST-ZA-4270 | Testing for Manholes | 2026-10-13 → 2026-10-20 (+7d) | 2026-11-05 → 2026-11-12 (+7d) |  | 71d → 83d |
| 5 | **Backfilling** | 2026-11-07 → 2026-11-14 (+7d) | 2026-11-30 → 2026-12-07 (+7d) |  |  |
| SDR-2-CON-ST-ZA-4280 | Backfilling for Manholes | 2026-11-07 → 2026-11-14 (+7d) | 2026-11-30 → 2026-12-07 (+7d) |  | 71d → 83d |
| 5 | **Catch basin** |  | 2027-03-22 → 2027-03-29 (+7d) |  |  |
| 1 | **Excavation** |  | 2026-11-09 → 2026-10-15 (-25d) |  |  |
| SDR-2-CON-ST-ZA-4220 | Excavation for Catch basin Section 2 |  | 2026-11-09 → 2026-10-15 A (-25d) | 50% → 100% | 82d → none |
| 2 | **bedding Works** |  | 2027-01-21 → 2027-01-28 (+7d) |  |  |
| SDR-2-CON-ST-ZA-4290 | Sand Dedding for Catch basin |  | 2027-01-21 → 2027-01-28 (+7d) | 50% → 65% | 40d → 39d |
| 3 | **Install Catch basin** |  | 2027-02-15 → 2027-02-23 (+8d) |  |  |
| SDR-2-CON-ST-ZA-4300 | Install Catch basin |  | 2027-02-15 → 2027-02-23 (+8d) | 50% → 65% | 40d → 39d |
| 4 | **Testing** | 2027-02-23 → 2027-03-02 (+7d) | 2027-03-06 → 2027-03-17 (+11d) |  |  |
| SDR-2-CON-ST-ZA-4310 | Testing for Catch basin pipe | 2027-02-23 → 2027-03-02 (+7d) | 2027-03-06 → 2027-03-17 (+11d) |  | 40d → 39d |
| 5 | **Backfilling** | 2027-03-07 → 2027-03-18 (+11d) | 2027-03-22 → 2027-03-29 (+7d) |  |  |
| SDR-2-CON-ST-ZA-4320 | Backfilling for Catch basin | 2027-03-07 → 2027-03-18 (+11d) | 2027-03-22 → 2027-03-29 (+7d) |  | 40d → 39d |
| 14 | **STORM WATER LINE IN ( PH2-A-MCF0 )** |  | 2027-04-18 → 2027-04-25 (+7d) |  |  |
| 8 | **Pipes Works** |  | 2026-12-23 → 2026-12-30 (+7d) |  |  |
| 7 | **bedding Works** | 2026-10-12 → 2026-10-19 (+7d) | 2026-11-04 → 2026-11-11 (+7d) |  |  |
| SDR-2-CON-ST-ZA-4390 | Sand bedding for GRP Pipes | 2026-10-12 → 2026-10-19 (+7d) | 2026-11-04 → 2026-11-11 (+7d) |  | 45d → 39d |
| 2 | **Pipes Laying** |  | 2026-11-04 → 2026-11-11 (+7d) |  |  |
| SDR-2-CON-ST-ZA-4340 | Install ST GRP Pipes |  | 2026-11-04 → 2026-11-11 (+7d) |  | 45d → 39d |
| 6 | **Testing** | 2026-11-05 → 2026-11-12 (+7d) | 2026-11-29 → 2026-12-06 (+7d) |  |  |
| SDR-2-CON-ST-ZA-4380 | Testing ST GRP Pipes | 2026-11-05 → 2026-11-12 (+7d) | 2026-11-29 → 2026-12-06 (+7d) |  | 45d → 39d |

| ID | Task | Start | Finish | Complete | Total float |
| --- | --- | --- | --- | --- | --- |
| 3 | **Backfilling** | 2026-11-30 → 2026-12-07 (+7d) | 2026-12-23 → 2026-12-30 (+7d) |  |  |
| SDR-2-CON-ST-ZA-4350 | Backfilling ST GRP Pipes | 2026-11-30 → 2026-12-07 (+7d) | 2026-12-23 → 2026-12-30 (+7d) |  | 45d → 39d |
| 4 | **Manholes** |  | 2027-01-18 → 2027-01-25 (+7d) |  |  |
| 1 | **Excavation** |  | 2026-10-12 → 2026-10-19 (+7d) |  |  |
| SDR-2-CON-ST-ZA-4360 | Excavation Manholes Section 2 |  | 2026-10-12 → 2026-10-19 (+7d) |  | 8d → 2d |
| 2 | **bedding Works** |  | 2026-11-05 → 2026-11-12 (+7d) |  |  |
| SDR-2-CON-ST-ZA-4400 | Sand bedding for Manholes |  | 2026-11-05 → 2026-11-12 (+7d) |  | 8d → 2d |
| 3 | **Install Manholes** |  | 2026-11-30 → 2026-12-07 (+7d) |  |  |
| SDR-2-CON-ST-ZA-4410 | Manholes Installation |  | 2026-11-30 → 2026-12-07 (+7d) |  | 8d → 2d |
| 4 | **Testing** | 2026-12-01 → 2026-12-08 (+7d) | 2026-12-24 → 2026-12-31 (+7d) |  |  |
| SDR-2-CON-ST-ZA-4420 | Testing for Manholes | 2026-12-01 → 2026-12-08 (+7d) | 2026-12-24 → 2026-12-31 (+7d) |  | 8d → 2d |
| 5 | **Backfilling** | 2026-12-26 → 2027-01-02 (+7d) | 2027-01-18 → 2027-01-25 (+7d) |  |  |
| SDR-2-CON-ST-ZA-4430 | Backfilling for Manholes | 2026-12-26 → 2027-01-02 (+7d) | 2027-01-18 → 2027-01-25 (+7d) |  | 8d → 2d |
| 5 | **Catch basin** |  | 2027-04-18 → 2027-04-25 (+7d) |  |  |
| 1 | **Excavation** |  | 2026-12-24 → 2026-12-31 (+7d) |  |  |
| SDR-2-CON-ST-ZA-4370 | Excavation for Catch basin Section 2 |  | 2026-12-24 → 2026-12-31 (+7d) |  | 17d → 16d |
| 2 | **bedding Works** |  | 2027-01-18 → 2027-01-25 (+7d) |  |  |
| SDR-2-CON-ST-ZA-4440 | Sand Dedding for Catch basin |  | 2027-01-18 → 2027-01-25 (+7d) |  | 17d → 16d |
| 3 | **Install Catch basin** |  | 2027-02-11 → 2027-02-18 (+7d) |  |  |
| SDR-2-CON-ST-ZA-4450 | Install Catch basin |  | 2027-02-11 → 2027-02-18 (+7d) |  | 17d → 16d |
| 4 | **Testing** | 2027-02-13 → 2027-02-20 (+7d) | 2027-03-14 → 2027-03-21 (+7d) |  |  |
| SDR-2-CON-ST-ZA-4460 | Testing for Catch basin pipe | 2027-02-13 → 2027-02-20 (+7d) | 2027-03-14 → 2027-03-21 (+7d) |  | 17d → 16d |
| 5 | **Backfilling** | 2027-03-15 → 2027-03-22 (+7d) | 2027-04-18 → 2027-04-25 (+7d) |  |  |
| SDR-2-CON-ST-ZA-7010 | Backfilling for Catch basin Section 1 | 2027-03-15 → 2027-03-22 (+7d) | 2027-03-31 → 2027-04-07 (+7d) |  | 17d → 16d |
| SDR-2-CON-ST-ZA-4470 | Backfilling for Catch basin Section 2 | 2027-04-01 → 2027-04-08 (+7d) | 2027-04-18 → 2027-04-25 (+7d) |  | 17d → 16d |
| 15 | **STORM WATER LINE IN ( PH2-A-MCG0 )** |  | 2027-04-13 → 2027-04-20 (+7d) |  |  |
| 8 | **Pipes Works** |  | 2027-01-17 → 2027-01-24 (+7d) |  |  |
| 7 | **bedding Works** |  | 2026-11-04 → 2026-11-11 (+7d) |  |  |
| SDR-2-CON-ST-ZA-4540 | Sand bedding for GRP Pipes |  | 2026-11-04 → 2026-11-11 (+7d) | 50% → 65% | 31d → 39d |
| 2 | **Pipes Laying** |  | 2026-11-29 → 2026-12-06 (+7d) |  |  |
| SDR-2-CON-ST-ZA-4490 | Install ST GRP Pipes |  | 2026-11-29 → 2026-12-06 (+7d) | 50% → 65% | 31d → 39d |
| 6 | **Testing** | 2026-11-30 → 2026-12-07 (+7d) | 2026-12-23 → 2026-12-30 (+7d) |  |  |
| SDR-2-CON-ST-ZA-4530 | Testing ST GRP Pipes | 2026-11-30 → 2026-12-07 (+7d) | 2026-12-23 → 2026-12-30 (+7d) |  | 31d → 39d |
| 3 | **Backfilling** | 2026-12-24 → 2026-12-31 (+7d) | 2027-01-17 → 2027-01-24 (+7d) |  |  |
| SDR-2-CON-ST-ZA-4500 | Backfilling ST GRP Pipes | 2026-12-24 → 2026-12-31 (+7d) | 2027-01-17 → 2027-01-24 (+7d) |  | 31d → 39d |
| 4 | **Manholes** |  | 2027-01-18 → 2027-01-25 (+7d) |  |  |
| 1 | **Excavation** |  | 2026-10-12 → 2026-10-19 (+7d) |  |  |
| SDR-2-CON-ST-ZA-4510 | Excavation Manholes Section 2 |  | 2026-10-12 → 2026-10-19 (+7d) |  | 16d → 21d |
| 2 | **bedding Works** |  | 2026-11-05 → 2026-11-12 (+7d) |  |  |
| SDR-2-CON-ST-ZA-4550 | Sand bedding for Manholes |  | 2026-11-05 → 2026-11-12 (+7d) |  | 16d → 21d |
| 3 | **Install Manholes** |  | 2026-11-30 → 2026-12-07 (+7d) |  |  |
| SDR-2-CON-ST-ZA-4560 | Manholes Installation |  | 2026-11-30 → 2026-12-07 (+7d) |  | 16d → 21d |
| 4 | **Testing** | 2026-12-01 → 2026-12-08 (+7d) | 2026-12-24 → 2026-12-31 (+7d) |  |  |
| SDR-2-CON-ST-ZA-4570 | Testing for Manholes | 2026-12-01 → 2026-12-08 (+7d) | 2026-12-24 → 2026-12-31 (+7d) |  | 16d → 21d |
| 5 | **Backfilling** | 2026-12-26 → 2027-01-02 (+7d) | 2027-01-18 → 2027-01-25 (+7d) |  |  |
| SDR-2-CON-ST-ZA-4580 | Backfilling for Manholes | 2026-12-26 → 2027-01-02 (+7d) | 2027-01-18 → 2027-01-25 (+7d) |  | 16d → 21d |
| 5 | **Catch basin** |  | 2027-04-13 → 2027-04-20 (+7d) |  |  |
| 1 | **Excavation** |  | 2026-12-30 → 2027-01-06 (+7d) |  |  |
| SDR-2-CON-ST-ZA-6500 | Excavation for Catch basin Section 1 |  | 2026-11-30 → 2026-12-07 (+7d) |  | 24d → 23d |
| SDR-2-CON-ST-ZA-4520 | Excavation for Catch basin Section 2 | 2026-12-07 → 2026-12-14 (+7d) | 2026-12-30 → 2027-01-06 (+7d) |  | 24d → 23d |
| 2 | **bedding Works** | 2026-12-31 → 2027-01-07 (+7d) | 2027-01-24 → 2027-01-31 (+7d) |  |  |
| SDR-2-CON-ST-ZA-4590 | Sand Dedding for Catch basin | 2026-12-31 → 2027-01-07 (+7d) | 2027-01-24 → 2027-01-31 (+7d) |  | 24d → 23d |
| 3 | **Install Catch basin** | 2027-01-25 → 2027-02-01 (+7d) | 2027-02-17 → 2027-02-25 (+8d) |  |  |
| SDR-2-CON-ST-ZA-4600 | Install Catch basin | 2027-01-25 → 2027-02-01 (+7d) | 2027-02-17 → 2027-02-25 (+8d) |  | 24d → 23d |
| 4 | **Testing** | 2027-02-18 → 2027-02-27 (+9d) | 2027-03-02 → 2027-03-14 (+12d) |  |  |
| SDR-2-CON-ST-ZA-4610 | Testing for Catch basin pipe | 2027-02-18 → 2027-02-27 (+9d) | 2027-03-02 → 2027-03-14 (+12d) |  | 24d → 23d |
| 5 | **Backfilling** | 2027-03-03 → 2027-03-15 (+12d) | 2027-04-13 → 2027-04-20 (+7d) |  |  |
| SDR-2-CON-ST-ZA-7020 | Backfilling for Catch basin Section 1 | 2027-03-03 → 2027-03-15 (+12d) | 2027-03-23 → 2027-03-30 (+7d) |  | 24d → 23d |
| SDR-2-CON-ST-ZA-4620 | Backfilling for Catch basin Section 2 | 2027-03-28 → 2027-04-04 (+7d) | 2027-04-13 → 2027-04-20 (+7d) |  | 21d → 20d |
| 16 | **STORM WATER LINE IN ( PH2-A-MCH0 )** |  | 2027-04-11 → 2027-04-18 (+7d) |  |  |
| 8 | **Pipes Works** |  | 2027-01-17 → 2027-01-24 (+7d) |  |  |
| 7 | **bedding Works** |  | 2026-11-04 → 2026-11-11 (+7d) |  |  |
| SDR-2-CON-ST-ZA-4690 | Sand bedding for GRP Pipes |  | 2026-11-04 → 2026-11-11 (+7d) |  | 11d → 5d |
| 2 | **Pipes Laying** |  | 2026-11-29 → 2026-12-06 (+7d) |  |  |
| SDR-2-CON-ST-ZA-4640 | Install ST GRP Pipes |  | 2026-11-29 → 2026-12-06 (+7d) |  | 11d → 5d |
| 6 | **Testing** | 2026-11-30 → 2026-12-07 (+7d) | 2026-12-23 → 2026-12-30 (+7d) |  |  |
| SDR-2-CON-ST-ZA-4680 | Testing ST GRP Pipes | 2026-11-30 → 2026-12-07 (+7d) | 2026-12-23 → 2026-12-30 (+7d) |  | 11d → 5d |
| 3 | **Backfilling** | 2026-12-24 → 2026-12-31 (+7d) | 2027-01-17 → 2027-01-24 (+7d) |  |  |
| SDR-2-CON-ST-ZA-4650 | Backfilling ST GRP Pipes | 2026-12-24 → 2026-12-31 (+7d) | 2027-01-17 → 2027-01-24 (+7d) |  | 11d → 5d |
| 4 | **Manholes** |  | 2027-01-18 → 2027-01-25 (+7d) |  |  |

| ID | Task | Start | Finish | Complete | Total float |
| --- | --- | --- | --- | --- | --- |
| 1 | **Excavation** |  | 2026-10-12 → 2026-10-19 (+7d) |  |  |
| SDR-2-CON-ST-ZA-6350 | Excavation Manholes Section 2 |  | 2026-10-12 → 2026-10-19 (+7d) | 50% → 60% | 13d → 7d |
| 2 | **bedding Works** | 2026-10-13 → 2026-10-20 (+7d) | 2026-11-05 → 2026-11-12 (+7d) |  |  |
| SDR-2-CON-ST-ZA-4700 | Sand bedding for Manholes | 2026-10-13 → 2026-10-20 (+7d) | 2026-11-05 → 2026-11-12 (+7d) |  | 13d → 7d |
| 3 | **Install Manholes** | 2026-11-07 → 2026-11-14 (+7d) | 2026-11-30 → 2026-12-07 (+7d) |  |  |
| SDR-2-CON-ST-ZA-4710 | Manholes Installation | 2026-11-07 → 2026-11-14 (+7d) | 2026-11-30 → 2026-12-07 (+7d) |  | 13d → 7d |
| 4 | **Testing** | 2026-12-01 → 2026-12-08 (+7d) | 2026-12-24 → 2026-12-31 (+7d) |  |  |
| SDR-2-CON-ST-ZA-4720 | Testing for Manholes | 2026-12-01 → 2026-12-08 (+7d) | 2026-12-24 → 2026-12-31 (+7d) |  | 13d → 7d |
| 5 | **Backfilling** | 2026-12-26 → 2027-01-02 (+7d) | 2027-01-18 → 2027-01-25 (+7d) |  |  |
| SDR-2-CON-ST-ZA-4730 | Backfilling for Manholes | 2026-12-26 → 2027-01-02 (+7d) | 2027-01-18 → 2027-01-25 (+7d) |  | 13d → 7d |
| 5 | **Catch basin** |  | 2027-04-11 → 2027-04-18 (+7d) |  |  |
| 1 | **Excavation** |  | 2026-12-24 → 2026-12-31 (+7d) |  |  |
| SDR-2-CON-ST-ZA-6530 | Excavation for Catch basin Section 1 |  | 2026-11-30 → 2026-12-07 (+7d) |  | 24d → 23d |
| SDR-2-CON-ST-ZA-4670 | Excavation for Catch basin Section 2 | 2026-12-01 → 2026-12-08 (+7d) | 2026-12-24 → 2026-12-31 (+7d) |  | 24d → 23d |
| 2 | **bedding Works** | 2026-12-26 → 2027-01-02 (+7d) | 2027-01-18 → 2027-01-25 (+7d) |  |  |
| SDR-2-CON-ST-ZA-4740 | Sand Dedding for Catch basin | 2026-12-26 → 2027-01-02 (+7d) | 2027-01-18 → 2027-01-25 (+7d) |  | 24d → 23d |
| 3 | **Install Catch basin** | 2027-01-25 → 2027-02-01 (+7d) | 2027-02-17 → 2027-02-25 (+8d) |  |  |
| SDR-2-CON-ST-ZA-4750 | Install Catch basin | 2027-01-25 → 2027-02-01 (+7d) | 2027-02-17 → 2027-02-25 (+8d) |  | 24d → 23d |
| 4 | **Testing** | 2027-02-18 → 2027-02-27 (+9d) | 2027-03-02 → 2027-03-14 (+12d) |  |  |
| SDR-2-CON-ST-ZA-4760 | Testing for Catch basin pipe | 2027-02-18 → 2027-02-27 (+9d) | 2027-03-02 → 2027-03-14 (+12d) |  | 24d → 23d |
| 5 | **Backfilling** | 2027-03-03 → 2027-03-15 (+12d) | 2027-04-11 → 2027-04-18 (+7d) |  |  |
| SDR-2-CON-ST-ZA-7030 | Backfilling for Catch basin Section 1 | 2027-03-03 → 2027-03-15 (+12d) | 2027-03-23 → 2027-03-30 (+7d) |  | 24d → 23d |
| SDR-2-CON-ST-ZA-4770 | Backfilling for Catch basin Section 2 | 2027-03-25 → 2027-04-01 (+7d) | 2027-04-11 → 2027-04-18 (+7d) |  | 23d → 22d |
| 1 | **STORM WATER LINE IN ( PH2-A-MCA0 )** |  | 2027-04-12 → 2027-04-19 (+7d) |  |  |
| 7 | **bedding Works** |  | 2026-11-04 → 2026-11-11 (+7d) |  |  |
| SDR-2-CON-ST-ZA-4840 | Sand bedding for GRP Pipes |  | 2026-11-04 → 2026-11-11 (+7d) |  |  |
| SDR-2-CON-ST-ZA-4790 | Install ST GRP Pipes | 2026-10-19 A → 2026-10-19 |  |  |  |
| 4 | **Manholes** |  | 2027-01-18 → 2027-01-25 (+7d) |  |  |
| 1 | **Excavation** |  | 2026-10-12 → 2026-10-19 (+7d) |  |  |
| SDR-2-CON-ST-ZA-4810 | Excavation Manholes Section 2 |  | 2026-10-12 → 2026-10-19 (+7d) |  | 13d → 7d |
| 2 | **bedding Works** |  | 2026-11-05 → 2026-11-12 (+7d) |  |  |
| SDR-2-CON-ST-ZA-4850 | Sand bedding for Manholes |  | 2026-11-05 → 2026-11-12 (+7d) |  | 13d → 7d |
| 3 | **Install Manholes** |  | 2026-11-30 → 2026-12-07 (+7d) |  |  |
| SDR-2-CON-ST-ZA-4860 | Manholes Installation |  | 2026-11-30 → 2026-12-07 (+7d) |  | 13d → 7d |
| 4 | **Testing** | 2026-12-01 → 2026-12-08 (+7d) | 2026-12-24 → 2026-12-31 (+7d) |  |  |
| SDR-2-CON-ST-ZA-4870 | Testing for Manholes | 2026-12-01 → 2026-12-08 (+7d) | 2026-12-24 → 2026-12-31 (+7d) |  | 13d → 7d |
| 5 | **Backfilling** | 2026-12-26 → 2027-01-02 (+7d) | 2027-01-18 → 2027-01-25 (+7d) |  |  |
| SDR-2-CON-ST-ZA-4880 | Backfilling for Manholes | 2026-12-26 → 2027-01-02 (+7d) | 2027-01-18 → 2027-01-25 (+7d) |  | 13d → 7d |
| 5 | **Catch basin** | 2026-08-16 → 2026-11-14 (+90d) | 2027-04-12 → 2027-04-19 (+7d) |  |  |
| 1 | **Excavation** | 2026-08-16 → 2026-11-14 (+90d) | 2026-12-31 → 2027-01-07 (+7d) |  |  |
| SDR-2-CON-ST-ZA-6560 | Excavation for Catch basin Section 1 | 2026-08-16 A → 2026-11-14 (+90d) | 2026-11-30 → 2026-12-07 (+7d) |  | 18d → 12d |
| SDR-2-CON-ST-ZA-4820 | Excavation for Catch basin Section 2 | 2026-12-08 → 2026-12-15 (+7d) | 2026-12-31 → 2027-01-07 (+7d) |  | 23.7d → 17.7d |
| 2 | **bedding Works** | 2027-01-02 → 2027-01-09 (+7d) | 2027-01-25 → 2027-02-01 (+7d) |  |  |
| SDR-2-CON-ST-ZA-4890 | Sand Dedding for Catch basin | 2027-01-02 → 2027-01-09 (+7d) | 2027-01-25 → 2027-02-01 (+7d) |  | 23.7d → 17.7d |
| 3 | **Install Catch basin** | 2027-01-26 → 2027-02-02 (+7d) | 2027-02-18 → 2027-02-27 (+9d) |  |  |
| SDR-2-CON-ST-ZA-4900 | Install Catch basin | 2027-01-26 → 2027-02-02 (+7d) | 2027-02-18 → 2027-02-27 (+9d) |  | 23.7d → 17.7d |
| 4 | **Testing** | 2027-02-20 → 2027-02-28 (+8d) | 2027-03-06 → 2027-03-17 (+11d) |  |  |
| SDR-2-CON-ST-ZA-4910 | Testing for Catch basin pipe | 2027-02-20 → 2027-02-28 (+8d) | 2027-03-06 → 2027-03-17 (+11d) |  | 23.7d → 17.7d |
| 5 | **Backfilling** | 2027-03-07 → 2027-03-18 (+11d) | 2027-04-12 → 2027-04-19 (+7d) |  |  |
| SDR-2-CON-ST-ZA-7040 | Backfilling for Catch basin Section 1 | 2027-03-07 → 2027-03-18 (+11d) | 2027-03-27 → 2027-04-03 (+7d) |  | 23.7d → 17.7d |
| SDR-2-CON-ST-ZA-4920 | Backfilling for Catch basin Section 2 | 2027-03-28 → 2027-04-04 (+7d) | 2027-04-12 → 2027-04-19 (+7d) |  | 23.7d → 17.7d |
| 17 | **STORM WATER LINE IN ( PH2-A-MCI0 )** |  | 2027-05-04 → 2027-05-11 (+7d) |  |  |
| 8 | **Pipes Works** |  | 2027-01-17 → 2027-01-24 (+7d) |  |  |
| 7 | **bedding Works** | 2026-10-12 → 2026-10-17 (+5d) | 2026-11-04 → 2026-11-11 (+7d) |  |  |
| SDR-2-CON-ST-ZA-4990 | Sand bedding for GRP Pipes | 2026-10-12 → 2026-10-17 A (+5d) | 2026-11-04 → 2026-11-11 (+7d) | 0% → 25% | 14d → 8d |
| 2 | **Pipes Laying** | 2026-11-05 → 2026-10-18 (-18d) | 2026-11-29 → 2026-12-06 (+7d) |  |  |
| SDR-2-CON-ST-ZA-4940 | Install ST GRP Pipes | 2026-11-05 → 2026-10-18 A (-18d) | 2026-11-29 → 2026-12-06 (+7d) | 0% → 25% | 14d → 8d |
| 6 | **Testing** | 2026-11-30 → 2026-12-07 (+7d) | 2026-12-23 → 2026-12-30 (+7d) |  |  |
| SDR-2-CON-ST-ZA-4980 | Testing ST GRP Pipes | 2026-11-30 → 2026-12-07 (+7d) | 2026-12-23 → 2026-12-30 (+7d) |  | 14d → 8d |
| 3 | **Backfilling** | 2026-12-24 → 2026-12-31 (+7d) | 2027-01-17 → 2027-01-24 (+7d) |  |  |
| SDR-2-CON-ST-ZA-4950 | Backfilling ST GRP Pipes | 2026-12-24 → 2026-12-31 (+7d) | 2027-01-17 → 2027-01-24 (+7d) |  | 14d → 8d |
| 4 | **Manholes** |  | 2027-01-18 → 2027-01-25 (+7d) |  |  |
| 1 | **Excavation** |  | 2026-10-12 → 2026-10-19 (+7d) |  |  |
| SDR-2-CON-ST-ZA-4960 | Excavation Manholes Section 2 |  | 2026-10-12 → 2026-10-19 (+7d) |  | 8d → 2d |
| 2 | **bedding Works** | 2026-10-13 → 2026-10-20 (+7d) | 2026-11-05 → 2026-11-12 (+7d) |  |  |
| SDR-2-CON-ST-ZA-5000 | Sand bedding for Manholes | 2026-10-13 → 2026-10-20 (+7d) | 2026-11-05 → 2026-11-12 (+7d) |  | 8d → 2d |
| 3 | **Install Manholes** | 2026-11-07 → 2026-11-14 (+7d) | 2026-11-30 → 2026-12-07 (+7d) |  |  |
| SDR-2-CON-ST-ZA-5010 | Manholes Installation | 2026-11-07 → 2026-11-14 (+7d) | 2026-11-30 → 2026-12-07 (+7d) |  | 8d → 2d |
| 4 | **Testing** | 2026-12-01 → 2026-12-08 (+7d) | 2026-12-24 → 2026-12-31 (+7d) |  |  |
| SDR-2-CON-ST-ZA-5020 | Testing for Manholes | 2026-12-01 → 2026-12-08 (+7d) | 2026-12-24 → 2026-12-31 (+7d) |  | 13d → 7d |

| ID | Task | Start | Finish | Total float |
| --- | --- | --- | --- | --- |
| 5 | **Backfilling** | 2026-12-26 → 2027-01-02 (+7d) | 2027-01-18 → 2027-01-25 (+7d) |  |
| SDR-2-CON-ST-ZA-5030 | Backfilling for Manholes | 2026-12-26 → 2027-01-02 (+7d) | 2027-01-18 → 2027-01-25 (+7d) | 13d → 7d |
| 5 | **Catch basin** | 2026-12-01 → 2026-12-08 (+7d) | 2027-05-04 → 2027-05-11 (+7d) |  |
| 1 | **Excavation** | 2026-12-01 → 2026-12-08 (+7d) | 2027-01-24 → 2027-01-31 (+7d) |  |
| SDR-2-CON-ST-ZA-6590 | Excavation for Catch basin Section 1 | 2026-12-01 → 2026-12-08 (+7d) | 2026-12-24 → 2026-12-31 (+7d) | 8d → 2d |
| SDR-2-CON-ST-ZA-4970 | Excavation for Catch basin Section 2 | 2026-12-31 → 2027-01-07 (+7d) | 2027-01-24 → 2027-01-31 (+7d) | 15d → 11d |
| 2 | **bedding Works** | 2027-01-25 → 2027-02-01 (+7d) | 2027-02-17 → 2027-02-25 (+8d) |  |
| SDR-2-CON-ST-ZA-5040 | Sand Dedding for Catch basin | 2027-01-25 → 2027-02-01 (+7d) | 2027-02-17 → 2027-02-25 (+8d) | 15d → 11d |
| 3 | **Install Catch basin** | 2027-02-18 → 2027-02-27 (+9d) | 2027-03-20 → 2027-03-27 (+7d) |  |
| SDR-2-CON-ST-ZA-5050 | Install Catch basin | 2027-02-18 → 2027-02-27 (+9d) | 2027-03-20 → 2027-03-27 (+7d) | 15d → 11d |
| 4 | **Testing** | 2027-03-21 → 2027-03-28 (+7d) | 2027-04-03 → 2027-04-10 (+7d) |  |
| SDR-2-CON-ST-ZA-5060 | Testing for Catch basin pipe | 2027-03-21 → 2027-03-28 (+7d) | 2027-04-03 → 2027-04-10 (+7d) | 15d → 11d |
| 5 | **Backfilling** | 2027-04-04 → 2027-04-11 (+7d) | 2027-05-04 → 2027-05-11 (+7d) |  |
| SDR-2-CON-ST-ZA-7050 | Backfilling for Catch basin Section 1 | 2027-04-04 → 2027-04-11 (+7d) | 2027-04-20 → 2027-04-27 (+7d) | 15d → 11d |
| SDR-2-CON-ST-ZA-5070 | Backfilling for Catch basin Section 2 | 2027-04-21 → 2027-04-28 (+7d) | 2027-05-04 → 2027-05-11 (+7d) | 15d → 11d |
| 18 | **STORM WATER LINE From STA-A2/10 TO STA-A2/1** |  | 2027-05-15 → 2027-05-27 (+12d) |  |
| 8 | **Pipes Works** |  | 2027-01-17 → 2027-01-24 (+7d) |  |
| 7 | **bedding Works** | 2026-10-12 → 2026-10-19 (+7d) | 2026-11-04 → 2026-11-11 (+7d) |  |
| SDR-2-CON-ST-ZA-5140 | Sand bedding for GRP Pipes | 2026-10-12 → 2026-10-19 (+7d) | 2026-11-04 → 2026-11-11 (+7d) | 3d → 5d |
| 2 | **Pipes Laying** | 2026-11-05 → 2026-11-12 (+7d) | 2026-11-29 → 2026-12-06 (+7d) |  |
| SDR-2-CON-ST-ZA-5090 | Install ST GRP Pipes | 2026-11-05 → 2026-11-12 (+7d) | 2026-11-29 → 2026-12-06 (+7d) | 3d → 5d |
| 6 | **Testing** | 2026-11-30 → 2026-12-07 (+7d) | 2026-12-23 → 2026-12-30 (+7d) |  |
| SDR-2-CON-ST-ZA-5130 | Testing ST GRP Pipes | 2026-11-30 → 2026-12-07 (+7d) | 2026-12-23 → 2026-12-30 (+7d) | 3d → 5d |
| 3 | **Backfilling** | 2026-12-24 → 2026-12-31 (+7d) | 2027-01-17 → 2027-01-24 (+7d) |  |
| SDR-2-CON-ST-ZA-5100 | Backfilling ST GRP Pipes | 2026-12-24 → 2026-12-31 (+7d) | 2027-01-17 → 2027-01-24 (+7d) | 3d → 5d |
| 4 | **Manholes** | 2026-10-12 → 2026-10-19 (+7d) | 2027-03-08 → 2027-03-20 (+12d) |  |
| 1 | **Excavation** | 2026-10-12 → 2026-10-19 (+7d) | 2026-11-29 → 2026-12-06 (+7d) |  |
| SDR-2-CON-ST-ZA-6610 | Excavation Manholes Section 1 | 2026-10-12 → 2026-10-19 (+7d) | 2026-11-04 → 2026-11-11 (+7d) | 2d → 14d |
| SDR-2-CON-ST-ZA-5110 | Excavation Manholes Section 2 | 2026-11-05 → 2026-11-12 (+7d) | 2026-11-29 → 2026-12-06 (+7d) | 2d → 14d |
| 2 | **bedding Works** | 2026-11-30 → 2026-12-07 (+7d) | 2026-12-23 → 2026-12-30 (+7d) |  |
| SDR-2-CON-ST-ZA-5150 | Sand bedding for Manholes | 2026-11-30 → 2026-12-07 (+7d) | 2026-12-23 → 2026-12-30 (+7d) | 2d → 14d |
| 3 | **Install Manholes** | 2026-12-24 → 2026-12-31 (+7d) | 2027-01-17 → 2027-01-24 (+7d) |  |
| SDR-2-CON-ST-ZA-5160 | Manholes Installation | 2026-12-24 → 2026-12-31 (+7d) | 2027-01-17 → 2027-01-24 (+7d) | 2d → 14d |
| 4 | **Testing** | 2027-01-18 → 2027-01-25 (+7d) | 2027-02-10 → 2027-02-17 (+7d) |  |
| SDR-2-CON-ST-ZA-5170 | Testing for Manholes | 2027-01-18 → 2027-01-25 (+7d) | 2027-02-10 → 2027-02-17 (+7d) | 2d → 14d |
| 5 | **Backfilling** | 2027-02-11 → 2027-02-18 (+7d) | 2027-03-08 → 2027-03-20 (+12d) |  |
| SDR-2-CON-ST-ZA-5180 | Backfilling for Manholes | 2027-02-11 → 2027-02-18 (+7d) | 2027-03-08 → 2027-03-20 (+12d) | 2d → 14d |
| 5 | **Catch basin** | 2026-12-26 → 2027-01-02 (+7d) | 2027-05-15 → 2027-05-27 (+12d) |  |
| 1 | **Excavation** | 2026-12-26 → 2027-01-02 (+7d) | 2027-02-11 → 2027-02-18 (+7d) |  |
| SDR-2-CON-ST-ZA-6620 | Excavation for Catch basin Section 1 | 2026-12-26 → 2027-01-02 (+7d) | 2027-01-18 → 2027-01-25 (+7d) | 8d → 2d |
| SDR-2-CON-ST-ZA-5120 | Excavation for Catch basin Section 2 | 2027-01-19 → 2027-01-26 (+7d) | 2027-02-11 → 2027-02-18 (+7d) | 8d → 2d |
| 2 | **bedding Works** | 2027-02-13 → 2027-02-20 (+7d) | 2027-03-14 → 2027-03-21 (+7d) |  |
| SDR-2-CON-ST-ZA-5190 | Sand Dedding for Catch basin | 2027-02-13 → 2027-02-20 (+7d) | 2027-03-14 → 2027-03-21 (+7d) | 8d → 2d |
| 3 | **Install Catch basin** | 2027-03-15 → 2027-03-22 (+7d) | 2027-04-07 → 2027-04-14 (+7d) |  |
| SDR-2-CON-ST-ZA-5200 | Install Catch basin | 2027-03-15 → 2027-03-22 (+7d) | 2027-04-07 → 2027-04-14 (+7d) | 8d → 2d |
| 4 | **Testing** | 2027-04-08 → 2027-04-15 (+7d) | 2027-04-21 → 2027-04-28 (+7d) |  |
| SDR-2-CON-ST-ZA-5210 | Testing for Catch basin pipe | 2027-04-08 → 2027-04-15 (+7d) | 2027-04-21 → 2027-04-28 (+7d) | 8d → 2d |
| 5 | **Backfilling** | 2027-04-22 → 2027-04-29 (+7d) | 2027-05-15 → 2027-05-27 (+12d) |  |
| SDR-2-CON-ST-ZA-7060 | Backfilling for Catch basin Section 1 | 2027-04-22 → 2027-04-29 (+7d) | 2027-05-06 → 2027-05-13 (+7d) | 8d → 2d |
| SDR-2-CON-ST-ZA-5220 | Backfilling for Catch basin Section 2 | 2027-04-29 → 2027-05-06 (+7d) | 2027-05-15 → 2027-05-27 (+12d) | 8d → 2d |
| 19 | **STORM WATER LINE From IP A7 To Pond A** |  | 2027-04-21 → 2027-04-28 (+7d) |  |
| 8 | **Pipes Works** |  | 2027-01-18 → 2027-01-25 (+7d) |  |
| 1 | **Excavation** |  | 2026-10-12 → 2026-10-19 (+7d) |  |
| SDR-2-CON-ST-ZA-5830 | Excavation for GRP Pipes Section 2 |  | 2026-10-12 → 2026-10-19 (+7d) | 19d → 13d |
| SDR-2-CON-ST-ZA-6630 | Excavation for GRP Pipes Section 1 |  | 2026-10-12 → 2026-10-19 (+7d) | 14d → 8d |
| 7 | **bedding Works** | 2026-10-13 → 2026-10-20 (+7d) | 2026-11-05 → 2026-11-12 (+7d) |  |
| SDR-2-CON-ST-ZA-5890 | Sand bedding for GRP Pipes | 2026-10-13 → 2026-10-20 (+7d) | 2026-11-05 → 2026-11-12 (+7d) | 19d → 13d |
| 2 | **Pipes Laying** | 2026-11-07 → 2026-11-14 (+7d) | 2026-11-30 → 2026-12-07 (+7d) |  |
| SDR-2-CON-ST-ZA-5840 | Install ST GRP Pipes | 2026-11-07 → 2026-11-14 (+7d) | 2026-11-30 → 2026-12-07 (+7d) | 19d → 13d |
| 6 | **Testing** | 2026-12-01 → 2026-12-08 (+7d) | 2026-12-24 → 2026-12-31 (+7d) |  |
| SDR-2-CON-ST-ZA-5880 | Testing ST GRP Pipes | 2026-12-01 → 2026-12-08 (+7d) | 2026-12-24 → 2026-12-31 (+7d) | 19d → 13d |
| 3 | **Backfilling** | 2026-12-26 → 2027-01-02 (+7d) | 2027-01-18 → 2027-01-25 (+7d) |  |
| SDR-2-CON-ST-ZA-5850 | Backfilling ST GRP Pipes | 2026-12-26 → 2027-01-02 (+7d) | 2027-01-18 → 2027-01-25 (+7d) | 19d → 13d |
| 4 | **Manholes** | 2026-10-12 → 2026-10-19 (+7d) | 2027-03-16 → 2027-03-23 (+7d) |  |
| 1 | **Excavation** | 2026-10-12 → 2026-10-19 (+7d) | 2026-12-02 → 2026-12-09 (+7d) |  |
| SDR-2-CON-ST-ZA-6640 | Excavation Manholes Section 1 | 2026-10-12 → 2026-10-19 (+7d) | 2026-11-04 → 2026-11-11 (+7d) | 14d → 8d |
| SDR-2-CON-ST-ZA-5860 | Excavation Manholes Section 2 | 2026-11-09 → 2026-11-16 (+7d) | 2026-12-02 → 2026-12-09 (+7d) | 14d → 8d |
| 2 | **bedding Works** | 2026-12-03 → 2026-12-10 (+7d) | 2026-12-27 → 2027-01-03 (+7d) |  |
| SDR-2-CON-ST-ZA-5900 | Sand bedding for Manholes | 2026-12-03 → 2026-12-10 (+7d) | 2026-12-27 → 2027-01-03 (+7d) | 14d → 8d |
| 3 | **Install Manholes** | 2026-12-28 → 2027-01-04 (+7d) | 2027-01-20 → 2027-01-27 (+7d) |  |

| ID | Task | Start | Finish | Total float |
| --- | --- | --- | --- | --- |
| SDR-2-CON-ST-ZA-5910 | Manholes Installation | 2026-12-28 → 2027-01-04 (+7d) | 2027-01-20 → 2027-01-27 (+7d) | 14d → 8d |
| 4 | **Testing** | 2027-01-21 → 2027-01-28 (+7d) | 2027-02-14 → 2027-02-21 (+7d) |  |
| SDR-2-CON-ST-ZA-5920 | Testing for Manholes | 2027-01-21 → 2027-01-28 (+7d) | 2027-02-14 → 2027-02-21 (+7d) | 14d → 8d |
| 5 | **Backfilling** | 2027-02-15 → 2027-02-23 (+8d) | 2027-03-16 → 2027-03-23 (+7d) |  |
| SDR-2-CON-ST-ZA-5930 | Backfilling for Manholes | 2027-02-15 → 2027-02-23 (+8d) | 2027-03-16 → 2027-03-23 (+7d) | 14d → 8d |
| 5 | **Catch basin** | 2026-12-01 → 2026-12-08 (+7d) | 2027-04-21 → 2027-04-28 (+7d) |  |
| 1 | **Excavation** | 2026-12-01 → 2026-12-08 (+7d) | 2027-01-18 → 2027-01-25 (+7d) |  |
| SDR-2-CON-ST-ZA-6650 | Excavation for Catch basin Section 1 | 2026-12-01 → 2026-12-08 (+7d) | 2026-12-24 → 2026-12-31 (+7d) | 18d → 12d |
| SDR-2-CON-ST-ZA-5870 | Excavation for Catch basin Section 2 | 2026-12-26 → 2027-01-02 (+7d) | 2027-01-18 → 2027-01-25 (+7d) | 18d → 12d |
| 2 | **bedding Works** | 2027-01-19 → 2027-01-26 (+7d) | 2027-02-11 → 2027-02-18 (+7d) |  |
| SDR-2-CON-ST-ZA-5940 | Sand Dedding for Catch basin | 2027-01-19 → 2027-01-26 (+7d) | 2027-02-11 → 2027-02-18 (+7d) | 18d → 12d |
| 3 | **Install Catch basin** | 2027-02-13 → 2027-02-20 (+7d) | 2027-03-14 → 2027-03-21 (+7d) |  |
| SDR-2-CON-ST-ZA-5950 | Install Catch basin | 2027-02-13 → 2027-02-20 (+7d) | 2027-03-14 → 2027-03-21 (+7d) | 18d → 12d |
| 4 | **Testing** | 2027-03-15 → 2027-03-22 (+7d) | 2027-03-23 → 2027-03-30 (+7d) |  |
| SDR-2-CON-ST-ZA-5960 | Testing for Catch basin pipe | 2027-03-15 → 2027-03-22 (+7d) | 2027-03-23 → 2027-03-30 (+7d) | 18d → 12d |
| 5 | **Backfilling** | 2027-03-29 → 2027-04-05 (+7d) | 2027-04-21 → 2027-04-28 (+7d) |  |
| SDR-2-CON-ST-ZA-5970 | Backfilling for Catch basin | 2027-03-29 → 2027-04-05 (+7d) | 2027-04-21 → 2027-04-28 (+7d) | 14d → 8d |
| 2 | **Concrete Box culverts** |  | 2026-12-08 → 2026-12-15 (+7d) |  |
| 6 | **For Pond A** |  | 2026-11-04 → 2026-11-11 (+7d) |  |
| 3 | **Plain Concrete** | 2026-10-12 → 2026-10-19 (+7d) | 2026-10-18 → 2026-10-25 (+7d) |  |
| SDR-2-CON-ST-ZA-3290 | Plain Concrete for box culvert | 2026-10-12 → 2026-10-19 (+7d) | 2026-10-18 → 2026-10-25 (+7d) | 35d → 44d |
| 4 | **Steel Reinforcement** | 2026-10-19 → 2026-10-26 (+7d) | 2026-10-27 → 2026-11-03 (+7d) |  |
| SDR-2-CON-ST-ZA-3300 | Steel Reinforcement for box culverts | 2026-10-19 → 2026-10-26 (+7d) | 2026-10-27 → 2026-11-03 (+7d) | 35d → 44d |
| 5 | **Reinforced Concrete** | 2026-10-28 → 2026-11-04 (+7d) | 2026-11-04 → 2026-11-11 (+7d) |  |
| SDR-2-CON-ST-ZA-3310 | Reinforced Concrete for box culvert | 2026-10-28 → 2026-11-04 (+7d) | 2026-11-04 → 2026-11-11 (+7d) | 35d → 44d |
| 7 | **For Pond B** |  | 2026-11-14 → 2026-11-21 (+7d) |  |
| 2 | **Backfilling with common / suitable excavated material** | 2026-10-12 → 2026-10-19 (+7d) | 2026-10-20 → 2026-10-27 (+7d) |  |
| SDR-2-CON-ST-ZA-6260 | Backfilling with common / suitable excavated material or with suitable imported material | 2026-10-12 → 2026-10-19 (+7d) | 2026-10-20 → 2026-10-27 (+7d) | 25d → 26d |
| 3 | **Plain Concrete** | 2026-10-21 → 2026-10-28 (+7d) | 2026-10-27 → 2026-11-03 (+7d) |  |
| SDR-2-CON-ST-ZA-6270 | Plain Concrete for box culvert | 2026-10-21 → 2026-10-28 (+7d) | 2026-10-27 → 2026-11-03 (+7d) | 25d → 26d |
| 4 | **Steel Reinforcement** | 2026-10-28 → 2026-11-04 (+7d) | 2026-11-05 → 2026-11-12 (+7d) |  |
| SDR-2-CON-ST-ZA-6280 | Steel Reinforcement for box culverts | 2026-10-28 → 2026-11-04 (+7d) | 2026-11-05 → 2026-11-12 (+7d) | 25d → 26d |
| 5 | **Reinforced Concrete** | 2026-11-07 → 2026-11-14 (+7d) | 2026-11-14 → 2026-11-21 (+7d) |  |
| SDR-2-CON-ST-ZA-6290 | Reinforced Concrete for box culvert | 2026-11-07 → 2026-11-14 (+7d) | 2026-11-14 → 2026-11-21 (+7d) | 25d → 26d |
| 8 | **For Pond C** | 2026-10-15 → 2026-10-22 (+7d) | 2026-12-08 → 2026-12-15 (+7d) |  |
| 1 | **Excavation** | 2026-10-15 → 2026-10-22 (+7d) | 2026-10-26 → 2026-11-02 (+7d) |  |
| SDR-2-CON-ST-ZA-6300 | Excavation for Box Culvert. | 2026-10-15 → 2026-10-22 (+7d) | 2026-10-26 → 2026-11-02 (+7d) | 17d → 26d |
| 2 | **Backfilling with common / suitable excavated material** | 2026-10-27 → 2026-11-03 (+7d) | 2026-11-04 → 2026-11-11 (+7d) |  |
| SDR-2-CON-ST-ZA-6310 | Backfilling with common / suitable excavated material or with suitable imported material | 2026-10-27 → 2026-11-03 (+7d) | 2026-11-04 → 2026-11-11 (+7d) | 17d → 26d |
| 3 | **Plain Concrete** | 2026-11-05 → 2026-11-12 (+7d) | 2026-11-11 → 2026-11-18 (+7d) |  |
| SDR-2-CON-ST-ZA-6320 | Plain Concrete for box culvert | 2026-11-05 → 2026-11-12 (+7d) | 2026-11-11 → 2026-11-18 (+7d) | 17d → 26d |
| 4 | **Steel Reinforcement** | 2026-11-12 → 2026-11-19 (+7d) | 2026-11-21 → 2026-11-28 (+7d) |  |
| SDR-2-CON-ST-ZA-6330 | Steel Reinforcement for box culverts | 2026-11-12 → 2026-11-19 (+7d) | 2026-11-21 → 2026-11-28 (+7d) | 17d → 26d |
| 5 | **Reinforced Concrete** | 2026-12-01 → 2026-12-08 (+7d) | 2026-12-08 → 2026-12-15 (+7d) |  |
| SDR-2-CON-ST-ZA-6340 | Reinforced Concrete for box culvert | 2026-12-01 → 2026-12-08 (+7d) | 2026-12-08 → 2026-12-15 (+7d) | 17d → 26d |
| 3 | **Drainage works for ponds and open canals** |  | 2027-04-06 → 2027-04-13 (+7d) |  |
| 7 | **Pond A** |  | 2026-12-30 → 2027-01-06 (+7d) |  |
| 3 | **Sand lining for pond bed** |  | 2026-11-11 → 2026-11-18 (+7d) |  |
| SDR-2-CON-ST-ZA-6690 | Sand lining for pond bed Section 1 & Section 2 |  | 2026-10-14 → 2026-10-21 (+7d) | 50d → 44d |
| SDR-2-CON-ST-ZA-6150 | Sand lining for pond bed Section 3 & Section 4 | 2026-10-19 → 2026-10-26 (+7d) | 2026-11-11 → 2026-11-18 (+7d) | 50d → 44d |
| 6 | **Pipe Encasements,** | 2026-11-12 → 2026-11-19 (+7d) | 2026-12-06 → 2026-12-13 (+7d) |  |
| SDR-2-CON-ST-ZA-6180 | Pipe encasement | 2026-11-12 → 2026-11-19 (+7d) | 2026-12-06 → 2026-12-13 (+7d) | 50d → 44d |
| 5 | **Concrete Outfalls** | 2026-12-07 → 2026-12-14 (+7d) | 2026-12-30 → 2027-01-06 (+7d) |  |
| SDR-2-CON-ST-ZA-6170 | Concrete Outfall structure. | 2026-12-07 → 2026-12-14 (+7d) | 2026-12-30 → 2027-01-06 (+7d) | 50d → 44d |
| 8 | **Pond B** |  | 2027-04-06 → 2027-04-13 (+7d) |  |
| 3 | **Sand lining for pond bed** |  | 2026-12-30 → 2027-01-06 (+7d) |  |
| SDR-2-CON-ST-ZA-6720 | Sand lining for pond bed Section 1 |  | 2026-12-08 → 2026-12-15 (+7d) | 17d → 29d |
| SDR-2-CON-ST-ZA-6210 | Sand lining for pond bed Section 2 | 2026-12-09 → 2026-12-16 (+7d) | 2026-12-30 → 2027-01-06 (+7d) | 17d → 29d |
| 6 | **Pipe Encasements,** | 2026-12-31 → 2027-01-07 (+7d) | 2027-01-24 → 2027-01-31 (+7d) |  |
| SDR-2-CON-ST-ZA-6240 | Pipe encasement | 2026-12-31 → 2027-01-07 (+7d) | 2027-01-24 → 2027-01-31 (+7d) | 17d → 29d |
| 5 | **Concrete Outfalls** | 2027-01-25 → 2027-02-01 (+7d) | 2027-02-17 → 2027-02-25 (+8d) |  |
| SDR-2-CON-ST-ZA-6230 | Concrete Outfall structure. | 2027-01-25 → 2027-02-01 (+7d) | 2027-02-17 → 2027-02-25 (+8d) | 17d → 29d |
| 4 | **Loose Riprap** | 2027-03-14 → 2027-03-21 (+7d) | 2027-04-06 → 2027-04-13 (+7d) |  |
| SDR-2-CON-ST-ZA-6220 | Loose Riprap work | 2027-03-14 → 2027-03-21 (+7d) | 2027-04-06 → 2027-04-13 (+7d) | 2d → 14d |
| 9 | **Pond C** |  | 2027-03-14 → 2027-03-21 (+7d) |  |
| 1 | **Excavation** |  | 2026-11-08 → 2026-11-15 (+7d) |  |
| SDR-2-CON-ST-ZA-6740 | Excavation for cutting material. Section 2 |  | 2026-10-14 → 2026-10-21 (+7d) | 2d → 4d |
| SDR-2-CON-ST-ZA-3320 | Excavation for cutting material. Section 3 | 2026-10-15 → 2026-10-22 (+7d) | 2026-11-08 → 2026-11-15 (+7d) | 2d → 4d |
| 3 | **Sand lining for pond bed** | 2026-11-09 → 2026-11-16 (+7d) | 2026-12-24 → 2026-12-31 (+7d) |  |
| SDR-2-CON-ST-ZA-6750 | Sand lining for pond bed Section 1 | 2026-11-09 → 2026-11-16 (+7d) | 2026-12-01 → 2026-12-08 (+7d) | 2d → 4d |

| ID | Task | Start | Finish | Total float |
| --- | --- | --- | --- | --- |
| SDR-2-CON-ST-ZA-3340 | Sand lining for pond bed Section 2 &Section 3 | 2026-12-02 → 2026-12-09 (+7d) | 2026-12-24 → 2026-12-31 (+7d) | 2d → 4d |
| 6 | **Pipe Encasements,** | 2026-12-26 → 2027-01-02 (+7d) | 2027-01-18 → 2027-01-25 (+7d) |  |
| SDR-2-CON-ST-ZA-3370 | Pipe encasement | 2026-12-26 → 2027-01-02 (+7d) | 2027-01-18 → 2027-01-25 (+7d) | 2d → 4d |
| 5 | **Concrete Outfalls** | 2027-01-19 → 2027-01-26 (+7d) | 2027-02-11 → 2027-02-18 (+7d) |  |
| SDR-2-CON-ST-ZA-3360 | Concrete Outfall structure. | 2027-01-19 → 2027-01-26 (+7d) | 2027-02-11 → 2027-02-18 (+7d) | 2d → 4d |
| 4 | **Loose Riprap** | 2027-02-13 → 2027-02-20 (+7d) | 2027-03-14 → 2027-03-21 (+7d) |  |
| SDR-2-CON-ST-ZA-3350 | Loose Riprap work | 2027-02-13 → 2027-02-20 (+7d) | 2027-03-14 → 2027-03-21 (+7d) | 2d → 4d |
| ZG | **ZONE G** |  | 2026-10-21 → 2026-10-28 (+7d) |  |
| 11 | **STORM WATER LINE IN ( PH2-G-MCE0 )** |  | 2026-10-14 → 2026-10-21 (+7d) |  |
| 4 | **Manholes** |  | 2026-10-14 → 2026-10-21 (+7d) |  |
| 4 | **Testing** |  | 2026-10-14 → 2026-10-21 (+7d) |  |
| SDR-2-CON-ST-ZA-5470 | Testing for Manholes |  | 2026-10-14 → 2026-10-21 (+7d) | 151d → 159d |
| 12 | **STORM WATER LINE IN ( PH2-G-MCF0 )** |  | 2026-10-14 → 2026-10-21 (+7d) |  |
| 4 | **Manholes** |  | 2026-10-14 → 2026-10-21 (+7d) |  |
| 4 | **Testing** |  | 2026-10-14 → 2026-10-21 (+7d) |  |
| SDR-2-CON-ST-ZA-5620 | Testing for Manholes |  | 2026-10-14 → 2026-10-21 (+7d) | 98d → 92d |
| 13 | **STORM WATER LINE IN ( PH2-G-MCG0 )** |  | 2026-10-21 → 2026-10-28 (+7d) |  |
| 4 | **Manholes** |  | 2026-10-21 → 2026-10-28 (+7d) |  |
| 4 | **Testing** |  | 2026-10-21 → 2026-10-28 (+7d) |  |
| SDR-2-CON-ST-ZA-6070 | Testing for Manholes |  | 2026-10-21 → 2026-10-28 (+7d) | 98d → 92d |
| SN | **Sewerage Network** |  | 2027-04-07 → 2027-04-14 (+7d) |  |
| ZA | **ZONE A** |  | 2027-04-07 → 2027-04-14 (+7d) |  |
| 3 | **LINE 1 ( PH2-A-MCA0 )** |  | 2026-11-07 → 2026-11-14 (+7d) |  |
| 7 | **Pipes Work** |  | 2026-11-07 → 2026-11-14 (+7d) |  |
| 2 | **Pipes Laying** |  | 2026-10-12 → 2026-10-19 (+7d) |  |
| SDR-2-CON-SE-ZA-1010 | 200 mm GRP Pipe Laying |  | 2026-10-12 → 2026-10-19 (+7d) | 118d → 112d |
| 3 | **Testing** |  | 2026-10-13 → 2026-10-20 (+7d) |  |
| SDR-2-CON-SE-ZA-1020 | Testing of 200 mm GRP Pipe. |  | 2026-10-13 → 2026-10-20 (+7d) | 117d → 111d |
| 6 | **Backfilling** | 2026-10-14 → 2026-10-21 (+7d) | 2026-11-07 → 2026-11-14 (+7d) |  |
| SDR-2-CON-SE-ZA-1430 | Backfilling of 200 mm GRP Pipe. | 2026-10-14 → 2026-10-21 (+7d) | 2026-11-07 → 2026-11-14 (+7d) | 117d → 111d |
| 4 | **Manholes** |  | 2026-11-05 → 2026-11-12 (+7d) |  |
| 3 | **Install Manholes** |  | 2026-10-13 → 2026-10-20 (+7d) |  |
| SDR-2-CON-SE-ZA-1040 | Manhole Installation |  | 2026-10-13 → 2026-10-20 (+7d) | 172d → 166d |
| 4 | **Testing** |  | 2026-10-12 → 2026-10-19 (+7d) |  |
| SDR-2-CON-SE-ZA-1050 | Testing |  | 2026-10-12 → 2026-10-19 (+7d) | 128d → 122d |
| 5 | **Backfilling** | 2026-10-13 → 2026-10-20 (+7d) | 2026-11-05 → 2026-11-12 (+7d) |  |
| SDR-2-CON-SE-ZA-1440 | Backfilling | 2026-10-13 → 2026-10-20 (+7d) | 2026-11-05 → 2026-11-12 (+7d) | 128d → 122d |
| 4 | **LINE 2 AND LINE 3 ( PH2-A-MCC0 )** |  | 2027-02-10 → 2027-02-17 (+7d) |  |
| 7 | **Pipes Work** |  | 2027-02-10 → 2027-02-17 (+7d) |  |
| 2 | **Pipes Laying** |  | 2026-11-15 → 2026-11-08 (-7d) |  |
| SDR-2-CON-SE-ZA-1470 | 200 mm GRP Pipe Laying |  | 2026-11-15 → 2026-11-08 (-7d) | 99d → 105d |
| 3 | **Testing** |  | 2027-01-17 → 2027-01-24 (+7d) |  |
| SDR-2-CON-SE-ZA-1480 | Testing of 200 mm GRP Pipe. |  | 2027-01-17 → 2027-01-24 (+7d) | 45d → 39d |
| 6 | **Backfilling** | 2027-01-18 → 2027-01-25 (+7d) | 2027-02-10 → 2027-02-17 (+7d) |  |
| SDR-2-CON-SE-ZA-1530 | Backfilling of 200 mm GRP Pipe. | 2027-01-18 → 2027-01-25 (+7d) | 2027-02-10 → 2027-02-17 (+7d) | 45d → 39d |
| 4 | **Manholes** |  | 2026-12-09 → 2026-12-02 (-7d) |  |
| 4 | **Testing** |  | 2026-11-15 → 2026-11-08 (-7d) |  |
| SDR-2-CON-SE-ZA-1510 | Testing |  | 2026-11-15 → 2026-11-08 (-7d) | 99d → 105d |
| 5 | **Backfilling** | 2026-11-16 → 2026-11-09 (-7d) | 2026-12-09 → 2026-12-02 (-7d) |  |
| SDR-2-CON-SE-ZA-1540 | Backfilling | 2026-11-16 → 2026-11-09 (-7d) | 2026-12-09 → 2026-12-02 (-7d) | 99d → 105d |
| 5 | **LINE 4 AND LINE 5 ( PH2-A-MCD0 )** |  | 2027-04-07 → 2027-04-14 (+7d) |  |
| 7 | **Pipes Work** |  | 2027-02-10 → 2027-02-17 (+7d) |  |
| 2 | **Pipes Laying** |  | 2026-10-12 → 2026-10-19 (+7d) |  |
| SDR-2-CON-SE-ZA-1570 | 200 mm GRP Pipe Laying |  | 2026-10-12 → 2026-10-19 (+7d) | 128d → 122d |
| 3 | **Testing** |  | 2027-01-17 → 2027-01-24 (+7d) |  |
| SDR-2-CON-SE-ZA-1580 | Testing of 200 mm GRP Pipe. |  | 2027-01-17 → 2027-01-24 (+7d) | 45d → 39d |
| 6 | **Backfilling** | 2027-01-18 → 2027-01-25 (+7d) | 2027-02-10 → 2027-02-17 (+7d) |  |
| SDR-2-CON-SE-ZA-1630 | Backfilling of 200 mm GRP Pipe. | 2027-01-18 → 2027-01-25 (+7d) | 2027-02-10 → 2027-02-17 (+7d) | 45d → 39d |
| 4 | **Manholes** |  | 2027-04-07 → 2027-04-14 (+7d) |  |
| 4 | **Testing** |  | 2027-01-18 → 2027-01-25 (+7d) |  |
| SDR-2-CON-SE-ZA-1610 | Testing |  | 2027-01-18 → 2027-01-25 (+7d) | 45d → 47d |
| 5 | **Backfilling** | 2027-03-15 → 2027-03-22 (+7d) | 2027-04-07 → 2027-04-14 (+7d) |  |
| SDR-2-CON-SE-ZA-2690 | Backfilling | 2027-03-15 → 2027-03-22 (+7d) | 2027-04-07 → 2027-04-14 (+7d) | 2d → 4d |
| 6 | **LINE 6 AND LINE 7 ( PH2-A-MCE0 )** |  | 2027-02-11 → 2027-02-18 (+7d) |  |
| 7 | **Pipes Work** |  | 2027-02-11 → 2027-02-18 (+7d) |  |
| 2 | **Pipes Laying** |  | 2026-12-31 → 2026-12-24 (-7d) |  |
| SDR-2-CON-SE-ZA-1670 | 200 mm GRP Pipe Laying |  | 2026-12-31 → 2026-12-24 (-7d) | 66d → 72d |
| 3 | **Testing** |  | 2027-01-18 → 2027-01-25 (+7d) |  |
| SDR-2-CON-SE-ZA-1680 | Testing of 200 mm GRP Pipe. |  | 2027-01-18 → 2027-01-25 (+7d) | 51d → 45d |
| 6 | **Backfilling** | 2027-01-19 → 2027-01-26 (+7d) | 2027-02-11 → 2027-02-18 (+7d) |  |

| ID | Task | Start | Finish | Total float |
| --- | --- | --- | --- | --- |
| SDR-2-CON-SE-ZA-1730 | Backfilling of 200 mm GRP Pipe. | 2027-01-19 → 2027-01-26 (+7d) | 2027-02-11 → 2027-02-18 (+7d) | 51d → 45d |
| 4 | **Manholes** |  | 2027-01-21 → 2027-01-28 (+7d) |  |
| 4 | **Testing** |  | 2026-12-22 → 2026-12-29 (+7d) |  |
| SDR-2-CON-SE-ZA-1710 | Testing |  | 2026-12-22 → 2026-12-29 (+7d) | 69d → 63d |
| 5 | **Backfilling** | 2026-12-29 → 2027-01-05 (+7d) | 2027-01-21 → 2027-01-28 (+7d) |  |
| SDR-2-CON-SE-ZA-1740 | Backfilling | 2026-12-29 → 2027-01-05 (+7d) | 2027-01-21 → 2027-01-28 (+7d) | 69d → 63d |
| 7 | **LINE 8 AND LINE 9 ( PH2-A-MCF0 )** |  | 2026-11-11 → 2026-11-18 (+7d) |  |
| 7 | **Pipes Work** |  | 2026-11-05 → 2026-11-12 (+7d) |  |
| 2 | **Pipes Laying** |  | 2026-10-12 → 2026-10-19 (+7d) |  |
| SDR-2-CON-SE-ZA-1770 | 200 mm GRP Pipe Laying |  | 2026-10-12 → 2026-10-19 (+7d) | 128d → 122d |
| 3 | **Testing** |  | 2026-10-12 → 2026-10-19 (+7d) |  |
| SDR-2-CON-SE-ZA-1780 | Testing of 200 mm GRP Pipe. |  | 2026-10-12 → 2026-10-19 (+7d) | 128d → 122d |
| 6 | **Backfilling** | 2026-10-13 → 2026-10-20 (+7d) | 2026-11-05 → 2026-11-12 (+7d) |  |
| SDR-2-CON-SE-ZA-1830 | Backfilling of 200 mm GRP Pipe. | 2026-10-13 → 2026-10-20 (+7d) | 2026-11-05 → 2026-11-12 (+7d) | 128d → 122d |
| 4 | **Manholes** |  | 2026-11-11 → 2026-11-18 (+7d) |  |
| 4 | **Testing** |  | 2026-10-12 → 2026-10-19 (+7d) |  |
| SDR-2-CON-SE-ZA-1810 | Testing |  | 2026-10-12 → 2026-10-19 (+7d) | 130d → 124d |
| 5 | **Backfilling** | 2026-10-22 → 2026-10-29 (+7d) | 2026-11-11 → 2026-11-18 (+7d) |  |
| SDR-2-CON-SE-ZA-1840 | Backfilling | 2026-10-22 → 2026-10-29 (+7d) | 2026-11-11 → 2026-11-18 (+7d) | 130d → 124d |
| 8 | **LINE 10 AND LINE 11 ( PH2-A-MCG0 )** |  | 2027-02-04 → 2027-02-11 (+7d) |  |
| 7 | **Pipes Work** |  | 2027-01-24 → 2027-01-31 (+7d) |  |
| 2 | **Pipes Laying** |  | 2026-10-12 → 2026-10-19 (+7d) |  |
| SDR-2-CON-SE-ZA-1870 | 200 mm GRP Pipe Laying |  | 2026-10-12 → 2026-10-19 (+7d) | 118d → 112d |
| 3 | **Testing** |  | 2026-12-31 → 2027-01-07 (+7d) |  |
| SDR-2-CON-SE-ZA-1880 | Testing of 200 mm GRP Pipe. |  | 2026-12-31 → 2027-01-07 (+7d) | 50d → 44d |
| 6 | **Backfilling** | 2026-12-31 → 2027-01-07 (+7d) | 2027-01-24 → 2027-01-31 (+7d) |  |
| SDR-2-CON-SE-ZA-1930 | Backfilling of 200 mm GRP Pipe. | 2026-12-31 → 2027-01-07 (+7d) | 2027-01-24 → 2027-01-31 (+7d) | 50d → 44d |
| 4 | **Manholes** |  | 2027-02-04 → 2027-02-11 (+7d) |  |
| 4 | **Testing** |  | 2026-12-31 → 2027-01-07 (+7d) |  |
| SDR-2-CON-SE-ZA-1910 | Testing |  | 2026-12-31 → 2027-01-07 (+7d) | 50d → 44d |
| 5 | **Backfilling** | 2027-01-12 → 2027-01-19 (+7d) | 2027-02-04 → 2027-02-11 (+7d) |  |
| SDR-2-CON-SE-ZA-1940 | Backfilling | 2027-01-12 → 2027-01-19 (+7d) | 2027-02-04 → 2027-02-11 (+7d) | 50d → 44d |
| 9 | **LINE 12 AND LINE 13 ( PH2-A-MCH0 )** |  | 2026-11-30 → 2026-12-07 (+7d) |  |
| 7 | **Pipes Work** |  | 2026-11-30 → 2026-12-07 (+7d) |  |
| 2 | **Pipes Laying** |  | 2026-10-12 → 2026-10-19 (+7d) |  |
| SDR-2-CON-SE-ZA-1970 | 200 mm GRP Pipe Laying |  | 2026-10-12 → 2026-10-19 (+7d) | 108d → 116d |
| 3 | **Testing** | 2026-10-13 → 2026-10-20 (+7d) | 2026-11-05 → 2026-11-12 (+7d) |  |
| SDR-2-CON-SE-ZA-1980 | Testing of 200 mm GRP Pipe. | 2026-10-13 → 2026-10-20 (+7d) | 2026-11-05 → 2026-11-12 (+7d) | 108d → 116d |
| 6 | **Backfilling** | 2026-11-07 → 2026-11-14 (+7d) | 2026-11-30 → 2026-12-07 (+7d) |  |
| SDR-2-CON-SE-ZA-2030 | Backfilling of 200 mm GRP Pipe. | 2026-11-07 → 2026-11-14 (+7d) | 2026-11-30 → 2026-12-07 (+7d) | 108d → 116d |
| 4 | **Manholes** |  | 2026-11-23 → 2026-11-30 (+7d) |  |
| 4 | **Testing** | 2026-10-12 → 2026-10-19 (+7d) | 2026-11-04 → 2026-11-11 (+7d) |  |
| SDR-2-CON-SE-ZA-2010 | Testing | 2026-10-12 → 2026-10-19 (+7d) | 2026-11-04 → 2026-11-11 (+7d) | 120d → 114d |
| 5 | **Backfilling** | 2026-11-05 → 2026-11-12 (+7d) | 2026-11-23 → 2026-11-30 (+7d) |  |
| SDR-2-CON-SE-ZA-2040 | Backfilling | 2026-11-05 → 2026-11-12 (+7d) | 2026-11-23 → 2026-11-30 (+7d) | 120d → 114d |
| ZG | **ZONE G** |  | 2027-01-10 → 2027-01-17 (+7d) |  |
| 3 | **LINE 49 AND LINE 51 ( PH2-G-MCE0 )** |  | 2026-10-21 → 2026-10-28 (+7d) |  |
| 4 | **Manholes** |  | 2026-10-21 → 2026-10-28 (+7d) |  |
| 4 | **Testing** |  | 2026-10-21 → 2026-10-28 (+7d) |  |
| SDR-2-CON-SE-ZA-2110 | Testing |  | 2026-10-21 → 2026-10-28 (+7d) | 147d → 141d |
| 4 | **LINE 50 ( PH2-G-MCD0 )** |  | 2027-01-10 → 2027-01-17 (+7d) |  |
| 7 | **Pipes Work** |  | 2027-01-10 → 2027-01-17 (+7d) |  |
| 3 | **Testing** |  | 2027-01-10 → 2027-01-17 (+7d) |  |
| SDR-2-CON-SE-ZA-2180 | Testing of 200 mm GRP Pipe. |  | 2027-01-10 → 2027-01-17 (+7d) | 78d → 72d |
| 4 | **Manholes** |  | 2026-10-21 → 2026-10-28 (+7d) |  |
| 4 | **Testing** |  | 2026-10-21 → 2026-10-28 (+7d) |  |
| SDR-2-CON-SE-ZA-2210 | Testing |  | 2026-10-21 → 2026-10-28 (+7d) | 141d → 135d |
| 5 | **LINE 52 AND LINE 53 ( PH2-G-MCF0 )** |  | 2026-10-21 → 2026-10-28 (+7d) |  |
| 4 | **Manholes** |  | 2026-10-21 → 2026-10-28 (+7d) |  |
| 4 | **Testing** |  | 2026-10-21 → 2026-10-28 (+7d) |  |
| SDR-2-CON-SE-ZA-2310 | Testing |  | 2026-10-21 → 2026-10-28 (+7d) | 140d → 134d |
| 6 | **LINE 54 AND LINE 55 ( PH2-G-MCG0 )** |  | 2026-10-21 → 2026-10-28 (+7d) |  |
| 4 | **Manholes** |  | 2026-10-21 → 2026-10-28 (+7d) |  |
| 4 | **Testing** |  | 2026-10-21 → 2026-10-28 (+7d) |  |
| SDR-2-CON-SE-ZA-2410 | Testing |  | 2026-10-21 → 2026-10-28 (+7d) | 153d → 147d |
| TSE | **TSE Network** |  | 2027-05-31 → 2027-06-10 (+10d) |  |
| ZA | **ZONE A** |  | 2027-04-26 → 2027-05-03 (+7d) |  |
| 1 | **TSE NETWORK IN ( PH2-COL-MC10 )** |  | 2027-04-19 → 2027-04-26 (+7d) |  |
| 6 | **Pipes Work** |  | 2027-04-19 → 2027-04-26 (+7d) |  |
| 1 | **Excavation** |  | 2026-12-20 → 2026-12-27 (+7d) |  |

| ID | Task | Start | Finish | Total float |
| --- | --- | --- | --- | --- |
| SDR-2-CON-TS-ZA-3200 | Excavation for TSE HDPE Pipes 225 mm Section 1 |  | 2026-11-15 → 2026-11-22 (+7d) | 28d → 22d |
| SDR-2-CON-TS-ZA-1000 | Excavation for TSE HDPE Pipes 225 mm Section 2 | 2026-08-09 A → 2026-12-05 (+118d) | 2026-12-20 → 2026-12-27 (+7d) | 2d → 0d |
| 6 | **bedding Works** | 2026-12-21 → 2026-12-28 (+7d) | 2027-01-13 → 2027-01-20 (+7d) |  |
| SDR-2-CON-TS-ZA-1900 | Sand bedding for TSE HDPE Pipes 225 mm | 2026-12-21 → 2026-12-28 (+7d) | 2027-01-13 → 2027-01-20 (+7d) | 37d → 31d |
| 2 | **Pipes Laying** | 2027-02-08 → 2027-02-15 (+7d) | 2027-03-04 → 2027-03-16 (+12d) |  |
| SDR-2-CON-TS-ZA-1010 | Install TSE 225 mm HDPE Pipe | 2027-02-08 → 2027-02-15 (+7d) | 2027-03-04 → 2027-03-16 (+12d) | 16d → 10d |
| 5 | **Testing** | 2027-03-06 → 2027-03-17 (+11d) | 2027-03-25 → 2027-04-01 (+7d) |  |
| SDR-2-CON-TS-ZA-1080 | Testing of TSE HDPE Pipe 225 mm. | 2027-03-06 → 2027-03-17 (+11d) | 2027-03-25 → 2027-04-01 (+7d) | 16d → 10d |
| 7 | **Backfilling** | 2027-03-27 → 2027-04-03 (+7d) | 2027-04-19 → 2027-04-26 (+7d) |  |
| SDR-2-CON-TS-ZA-1910 | Backfilling of TSE HDPE Pipe 225 mm. | 2027-03-27 → 2027-04-03 (+7d) | 2027-04-19 → 2027-04-26 (+7d) | 16d → 10d |
| 3 | **Valve Chambers & Valves** | 2026-11-23 → 2026-11-30 (+7d) | 2027-04-13 → 2027-04-20 (+7d) |  |
| 3 | **Excavation** | 2026-11-23 → 2026-11-30 (+7d) | 2027-01-07 → 2027-01-14 (+7d) |  |
| SDR-2-CON-TS-ZA-3210 | Excavation for Valve Chambers Section 1 | 2026-11-23 → 2026-11-30 (+7d) | 2026-12-15 → 2026-12-22 (+7d) | 21d → 15d |
| SDR-2-CON-TS-ZA-1040 | Excavation for Valve Chambers Section 2 | 2026-12-16 → 2026-12-23 (+7d) | 2027-01-07 → 2027-01-14 (+7d) | 21d → 15d |
| 1 | **bedding Works** | 2027-01-09 → 2027-01-16 (+7d) | 2027-02-01 → 2027-02-08 (+7d) |  |
| SDR-2-CON-TS-ZA-1020 | Sand bedding for Valve Chambers | 2027-01-09 → 2027-01-16 (+7d) | 2027-02-01 → 2027-02-08 (+7d) | 21d → 15d |
| 4 | **Install Chambers & Valves** | 2027-02-02 → 2027-02-09 (+7d) | 2027-02-27 → 2027-03-06 (+7d) |  |
| SDR-2-CON-TS-ZA-1050 | Valve Chambers & Valves Installation | 2027-02-02 → 2027-02-09 (+7d) | 2027-02-27 → 2027-03-06 (+7d) | 21d → 15d |
| 5 | **Testing** | 2027-02-28 → 2027-03-07 (+7d) | 2027-03-20 → 2027-03-27 (+7d) |  |
| SDR-2-CON-TS-ZA-1060 | Testing Chambers & Valves Installation | 2027-02-28 → 2027-03-07 (+7d) | 2027-03-20 → 2027-03-27 (+7d) | 21d → 15d |
| 6 | **Backfilling** | 2027-03-21 → 2027-03-28 (+7d) | 2027-04-13 → 2027-04-20 (+7d) |  |
| SDR-2-CON-TS-ZA-1070 | Backfilling Chambers & Valves Installation | 2027-03-21 → 2027-03-28 (+7d) | 2027-04-13 → 2027-04-20 (+7d) | 21d → 15d |
| 2 | **TSE NETWORK IN ( PH2-COL-MC20 )** |  | 2027-04-15 → 2027-04-22 (+7d) |  |
| 6 | **Pipes Work** |  | 2027-04-11 → 2027-04-18 (+7d) |  |
| 1 | **Excavation** |  | 2027-01-13 → 2027-01-20 (+7d) |  |
| SDR-2-CON-TS-ZA-3220 | Excavation for TSE HDPE Pipes 225 mm Section 1 |  | 2026-12-21 → 2026-12-28 (+7d) | 23d → 17d |
| SDR-2-CON-TS-ZA-2200 | Excavation for TSE HDPE Pipes 225 mm Section 2 | 2026-12-22 → 2026-12-29 (+7d) | 2027-01-13 → 2027-01-20 (+7d) | 23d → 17d |
| 6 | **bedding Works** | 2027-01-14 → 2027-01-21 (+7d) | 2027-02-07 → 2027-02-14 (+7d) |  |
| SDR-2-CON-TS-ZA-2280 | Sand bedding for TSE HDPE Pipes 225 mm | 2027-01-14 → 2027-01-21 (+7d) | 2027-02-07 → 2027-02-14 (+7d) | 23d → 17d |
| 2 | **Pipes Laying** |  | 2027-03-04 → 2027-03-16 (+12d) |  |
| SDR-2-CON-TS-ZA-2210 | Install TSE 225 mm HDPE Pipe |  | 2027-03-04 → 2027-03-16 (+12d) | 23d → 17d |
| 5 | **Testing** | 2027-03-06 → 2027-03-17 (+11d) | 2027-03-21 → 2027-03-28 (+7d) |  |
| SDR-2-CON-TS-ZA-2270 | Testing of TSE HDPE Pipe 225 mm. | 2027-03-06 → 2027-03-17 (+11d) | 2027-03-21 → 2027-03-28 (+7d) | 23d → 17d |
| 7 | **Backfilling** | 2027-03-22 → 2027-03-29 (+7d) | 2027-04-11 → 2027-04-18 (+7d) |  |
| SDR-2-CON-TS-ZA-2290 | Backfilling of TSE HDPE Pipe 225 mm. | 2027-03-22 → 2027-03-29 (+7d) | 2027-04-11 → 2027-04-18 (+7d) | 23d → 17d |
| 3 | **Valve Chambers & Valves** | 2026-11-29 → 2026-12-06 (+7d) | 2027-04-15 → 2027-04-22 (+7d) |  |
| 3 | **Excavation** | 2026-11-29 → 2026-12-06 (+7d) | 2027-01-13 → 2027-01-20 (+7d) |  |
| SDR-2-CON-TS-ZA-3230 | Excavation for Valve Chambers Section 1 | 2026-11-29 → 2026-12-06 (+7d) | 2026-12-21 → 2026-12-28 (+7d) | 23d → 17d |
| SDR-2-CON-TS-ZA-2230 | Excavation for Valve Chambers Section 2 | 2026-12-22 → 2026-12-29 (+7d) | 2027-01-13 → 2027-01-20 (+7d) | 23d → 17d |
| 1 | **bedding Works** | 2027-01-19 → 2027-01-26 (+7d) | 2027-02-11 → 2027-02-18 (+7d) |  |
| SDR-2-CON-TS-ZA-2220 | Sand bedding for Valve Chambers | 2027-01-19 → 2027-01-26 (+7d) | 2027-02-11 → 2027-02-18 (+7d) | 19d → 13d |
| 4 | **Install Chambers & Valves** | 2027-02-13 → 2027-02-20 (+7d) | 2027-03-14 → 2027-03-21 (+7d) |  |
| SDR-2-CON-TS-ZA-2240 | Valve Chambers & Valves Installation | 2027-02-13 → 2027-02-20 (+7d) | 2027-03-14 → 2027-03-21 (+7d) | 19d → 13d |
| 5 | **Testing** | 2027-03-15 → 2027-03-22 (+7d) | 2027-03-25 → 2027-04-01 (+7d) |  |
| SDR-2-CON-TS-ZA-2250 | Testing Chambers & Valves Installation | 2027-03-15 → 2027-03-22 (+7d) | 2027-03-25 → 2027-04-01 (+7d) | 19d → 13d |
| 6 | **Backfilling** | 2027-03-27 → 2027-04-03 (+7d) | 2027-04-15 → 2027-04-22 (+7d) |  |
| SDR-2-CON-TS-ZA-2260 | Backfilling Chambers & Valves Installation | 2027-03-27 → 2027-04-03 (+7d) | 2027-04-15 → 2027-04-22 (+7d) | 19d → 13d |
| 3 | **TSE NETWORK IN ( PH2-A-MCC0 )** |  | 2027-04-20 → 2027-04-27 (+7d) |  |
| 6 | **Pipes Work** |  | 2027-02-24 → 2027-02-16 (-8d) |  |
| 1 | **Excavation** |  | 2026-12-09 → 2026-12-02 (-7d) |  |
| SDR-2-CON-TS-ZA-1180 | Excavation for TSE HDPE Pipes 125 mm Section 2 | 2026-11-16 → 2026-11-09 (-7d) | 2026-12-09 → 2026-12-02 (-7d) | 58d → 64d |
| 3 | **bedding Works** | 2026-12-10 → 2026-12-03 (-7d) | 2027-01-03 → 2026-12-27 (-7d) |  |
| SDR-2-CON-TS-ZA-1920 | Sand bedding for TSE HDPE Pipes 125 mm | 2026-12-10 → 2026-12-03 (-7d) | 2027-01-03 → 2026-12-27 (-7d) | 58d → 64d |
| 2 | **Pipes Laying** | 2027-01-04 → 2026-12-28 (-7d) | 2027-01-27 → 2027-01-20 (-7d) |  |
| SDR-2-CON-TS-ZA-1190 | Install TSE 125 mm HDPE Pipe | 2027-01-04 → 2026-12-28 (-7d) | 2027-01-27 → 2027-01-20 (-7d) | 58d → 64d |
| 5 | **Testing** | 2027-01-28 → 2027-01-21 (-7d) | 2027-02-08 → 2027-02-01 (-7d) |  |
| SDR-2-CON-TS-ZA-1260 | Testing of TSE HDPE Pipe 125 mm. | 2027-01-28 → 2027-01-21 (-7d) | 2027-02-08 → 2027-02-01 (-7d) | 58d → 64d |
| 4 | **Backfilling** | 2027-02-09 → 2027-02-02 (-7d) | 2027-02-24 → 2027-02-16 (-8d) |  |
| SDR-2-CON-TS-ZA-1930 | Backfilling of TSE HDPE Pipe 125 mm. | 2027-02-09 → 2027-02-02 (-7d) | 2027-02-24 → 2027-02-16 (-8d) | 58d → 64d |
| 3 | **Valve Chambers & Valves** | 2026-10-12 → 2026-10-19 (+7d) | 2027-04-20 → 2027-04-27 (+7d) |  |
| 3 | **Excavation** | 2026-10-12 → 2026-10-19 (+7d) | 2026-11-25 → 2026-12-02 (+7d) |  |
| SDR-2-CON-TS-ZA-3250 | Excavation for Valve Chambers Section 1 | 2026-10-12 → 2026-10-19 (+7d) | 2026-11-04 → 2026-11-11 (+7d) | 64.3d → 58.3d |
| SDR-2-CON-TS-ZA-2010 | Excavation for Valve Chambers Section 2 | 2026-11-05 → 2026-11-12 (+7d) | 2026-11-25 → 2026-12-02 (+7d) | 64.3d → 58.3d |
| 1 | **bedding Works** | 2026-11-26 → 2026-12-03 (+7d) | 2026-12-20 → 2026-12-27 (+7d) |  |
| SDR-2-CON-TS-ZA-2000 | Sand bedding for Valve Chambers | 2026-11-26 → 2026-12-03 (+7d) | 2026-12-20 → 2026-12-27 (+7d) | 64.3d → 58.3d |
| 4 | **Install Chambers & Valves** | 2027-02-16 → 2027-02-24 (+8d) | 2027-03-17 → 2027-03-24 (+7d) |  |
| SDR-2-CON-TS-ZA-2020 | Valve Chambers & Valves Installation | 2027-02-16 → 2027-02-24 (+8d) | 2027-03-17 → 2027-03-24 (+7d) | 15.3d → 9.3d |
| 5 | **Testing** | 2027-03-18 → 2027-03-25 (+7d) | 2027-03-25 → 2027-04-01 (+7d) |  |
| SDR-2-CON-TS-ZA-2030 | Testing Chambers & Valves Installation | 2027-03-18 → 2027-03-25 (+7d) | 2027-03-25 → 2027-04-01 (+7d) | 15.3d → 9.3d |
| 6 | **Backfilling** | 2027-03-27 → 2027-04-03 (+7d) | 2027-04-20 → 2027-04-27 (+7d) |  |

| ID | Task | Start | Finish | Total float |
| --- | --- | --- | --- | --- |
| SDR-2-CON-TS-ZA-2040 | Backfilling Chambers & Valves Installation | 2027-03-27 → 2027-04-03 (+7d) | 2027-04-20 → 2027-04-27 (+7d) | 15.3d → 9.3d |
| 4 | **TSE NETWORK IN ( PH2-A-MCD0 )** |  | 2027-04-25 → 2027-05-02 (+7d) |  |
| 6 | **Pipes Work** |  | 2027-04-24 → 2027-05-01 (+7d) |  |
| 1 | **Excavation** |  | 2026-11-02 → 2026-11-09 (+7d) |  |
| SDR-2-CON-TS-ZA-1270 | Excavation for TSE HDPE Pipes 90 mm Section 2 |  | 2026-11-02 → 2026-11-09 (+7d) | 84d → 78d |
| 3 | **bedding Works** |  | 2026-11-23 → 2026-11-30 (+7d) |  |
| SDR-2-CON-TS-ZA-1940 | Sand bedding for TSE HDPE Pipes 90 mm |  | 2026-11-23 → 2026-11-30 (+7d) | 84d → 78d |
| 2 | **Pipes Laying** |  | 2027-03-17 → 2027-03-24 (+7d) |  |
| SDR-2-CON-TS-ZA-1280 | Install TSE 90 mm HDPE Pipe |  | 2027-03-17 → 2027-03-24 (+7d) | 12d → 6d |
| 5 | **Testing** | 2027-03-18 → 2027-03-25 (+7d) | 2027-03-30 → 2027-04-06 (+7d) |  |
| SDR-2-CON-TS-ZA-1350 | Testing of TSE HDPE Pipe 90 mm. | 2027-03-18 → 2027-03-25 (+7d) | 2027-03-30 → 2027-04-06 (+7d) | 12d → 6d |
| 4 | **Backfilling** | 2027-03-31 → 2027-04-07 (+7d) | 2027-04-24 → 2027-05-01 (+7d) |  |
| SDR-2-CON-TS-ZA-1950 | Backfilling of TSE HDPE Pipe 90 mm. | 2027-03-31 → 2027-04-07 (+7d) | 2027-04-24 → 2027-05-01 (+7d) | 12d → 6d |
| 3 | **Valve Chambers & Valves** | 2026-10-12 → 2026-10-19 (+7d) | 2027-04-25 → 2027-05-02 (+7d) |  |
| 3 | **Excavation** | 2026-10-12 → 2026-10-19 (+7d) | 2026-11-25 → 2026-12-02 (+7d) |  |
| SDR-2-CON-TS-ZA-3270 | Excavation for Valve Chambers Section 1 | 2026-10-12 → 2026-10-19 (+7d) | 2026-11-03 → 2026-11-10 (+7d) | 65d → 59d |
| SDR-2-CON-TS-ZA-2060 | Excavation for Valve Chambers Section 2 | 2026-11-04 → 2026-11-11 (+7d) | 2026-11-25 → 2026-12-02 (+7d) | 65d → 59d |
| 1 | **bedding Works** | 2026-11-26 → 2026-12-03 (+7d) | 2026-12-14 → 2026-12-21 (+7d) |  |
| SDR-2-CON-TS-ZA-2050 | Sand bedding for Valve Chambers | 2026-11-26 → 2026-12-03 (+7d) | 2026-12-14 → 2026-12-21 (+7d) | 65d → 59d |
| 4 | **Install Chambers & Valves** | 2027-02-16 → 2027-02-24 (+8d) | 2027-03-17 → 2027-03-24 (+7d) |  |
| SDR-2-CON-TS-ZA-2070 | Valve Chambers & Valves Installation | 2027-02-16 → 2027-02-24 (+8d) | 2027-03-17 → 2027-03-24 (+7d) | 11d → 5d |
| 5 | **Testing** | 2027-03-18 → 2027-03-25 (+7d) | 2027-04-03 → 2027-04-10 (+7d) |  |
| SDR-2-CON-TS-ZA-2080 | Testing Chambers & Valves Installation | 2027-03-18 → 2027-03-25 (+7d) | 2027-04-03 → 2027-04-10 (+7d) | 11d → 5d |
| 6 | **Backfilling** | 2027-04-04 → 2027-04-11 (+7d) | 2027-04-25 → 2027-05-02 (+7d) |  |
| SDR-2-CON-TS-ZA-2090 | Backfilling Chambers & Valves Installation | 2027-04-04 → 2027-04-11 (+7d) | 2027-04-25 → 2027-05-02 (+7d) | 11d → 5d |
| 5 | **TSE NETWORK IN ( PH2-A-MCE0 )** |  | 2027-04-26 → 2027-05-03 (+7d) |  |
| 6 | **Pipes Work** |  | 2027-04-26 → 2027-05-03 (+7d) |  |
| 3 | **bedding Works** |  | 2027-03-03 → 2027-03-15 (+12d) |  |
| SDR-2-CON-TS-ZA-2630 | Sand bedding for TSE HDPE Pipes 90 mm |  | 2027-03-03 → 2027-03-15 (+12d) | 28d → 36d |
| 2 | **Pipes Laying** |  | 2027-03-29 → 2027-04-05 (+7d) |  |
| SDR-2-CON-TS-ZA-2610 | Install TSE 90 mm HDPE Pipe |  | 2027-03-29 → 2027-04-05 (+7d) | 28d → 36d |
| 5 | **Testing** | 2027-03-30 → 2027-04-06 (+7d) | 2027-04-10 → 2027-04-17 (+7d) |  |
| SDR-2-CON-TS-ZA-2620 | Testing of TSE HDPE Pipe 90 mm. | 2027-03-30 → 2027-04-06 (+7d) | 2027-04-10 → 2027-04-17 (+7d) | 28d → 36d |
| 4 | **Backfilling** | 2027-04-04 → 2027-04-11 (+7d) | 2027-04-26 → 2027-05-03 (+7d) |  |
| SDR-2-CON-TS-ZA-2640 | Backfilling of TSE HDPE Pipe 90 mm. | 2027-04-04 → 2027-04-11 (+7d) | 2027-04-26 → 2027-05-03 (+7d) | 28d → 36d |
| 3 | **Valve Chambers & Valves** | 2026-10-12 → 2026-10-19 (+7d) | 2027-02-14 → 2027-02-21 (+7d) |  |
| 3 | **Excavation** | 2026-10-12 → 2026-10-19 (+7d) | 2026-11-26 → 2026-12-03 (+7d) |  |
| SDR-2-CON-TS-ZA-3290 | Excavation for Valve Chambers Section 1 | 2026-10-12 → 2026-10-19 (+7d) | 2026-11-04 → 2026-11-11 (+7d) | 66d → 60d |
| SDR-2-CON-TS-ZA-2660 | Excavation for Valve Chambers Section 2 | 2026-11-05 → 2026-11-12 (+7d) | 2026-11-26 → 2026-12-03 (+7d) | 66d → 60d |
| 1 | **bedding Works** | 2026-11-28 → 2026-12-05 (+7d) | 2026-12-20 → 2026-12-27 (+7d) |  |
| SDR-2-CON-TS-ZA-2650 | Sand bedding for Valve Chambers | 2026-11-28 → 2026-12-05 (+7d) | 2026-12-20 → 2026-12-27 (+7d) | 66d → 60d |
| 4 | **Install Chambers & Valves** | 2026-12-21 → 2026-12-28 (+7d) | 2027-01-13 → 2027-01-20 (+7d) |  |
| SDR-2-CON-TS-ZA-2670 | Valve Chambers & Valves Installation | 2026-12-21 → 2026-12-28 (+7d) | 2027-01-13 → 2027-01-20 (+7d) | 66d → 60d |
| 5 | **Testing** | 2027-01-14 → 2027-01-21 (+7d) | 2027-01-21 → 2027-01-28 (+7d) |  |
| SDR-2-CON-TS-ZA-2680 | Testing Chambers & Valves Installation | 2027-01-14 → 2027-01-21 (+7d) | 2027-01-21 → 2027-01-28 (+7d) | 66d → 60d |
| 6 | **Backfilling** | 2027-01-23 → 2027-01-30 (+7d) | 2027-02-14 → 2027-02-21 (+7d) |  |
| SDR-2-CON-TS-ZA-2690 | Backfilling Chambers & Valves Installation | 2027-01-23 → 2027-01-30 (+7d) | 2027-02-14 → 2027-02-21 (+7d) | 66d → 60d |
| 6 | **TSE NETWORK IN ( PH2-A-MCF0 )** |  | 2027-03-31 → 2027-04-07 (+7d) |  |
| 6 | **Pipes Work** |  | 2027-01-25 → 2027-02-01 (+7d) |  |
| 1 | **Excavation** |  | 2026-11-03 → 2026-11-10 (+7d) |  |
| SDR-2-CON-TS-ZA-2700 | Excavation for TSE HDPE Pipes 90 mm Section 2 |  | 2026-11-03 → 2026-11-10 (+7d) | 83d → 77d |
| 3 | **bedding Works** |  | 2026-11-26 → 2026-12-03 (+7d) |  |
| SDR-2-CON-TS-ZA-2730 | Sand bedding for TSE HDPE Pipes 90 mm |  | 2026-11-26 → 2026-12-03 (+7d) | 83d → 77d |
| 2 | **Pipes Laying** |  | 2026-12-19 → 2026-12-26 (+7d) |  |
| SDR-2-CON-TS-ZA-2710 | Install TSE 90 mm HDPE Pipe |  | 2026-12-19 → 2026-12-26 (+7d) | 83d → 77d |
| 5 | **Testing** | 2026-12-20 → 2026-12-27 (+7d) | 2026-12-31 → 2027-01-07 (+7d) |  |
| SDR-2-CON-TS-ZA-2720 | Testing of TSE HDPE Pipe 90 mm. | 2026-12-20 → 2026-12-27 (+7d) | 2026-12-31 → 2027-01-07 (+7d) | 83d → 77d |
| 4 | **Backfilling** | 2027-01-02 → 2027-01-09 (+7d) | 2027-01-25 → 2027-02-01 (+7d) |  |
| SDR-2-CON-TS-ZA-2740 | Backfilling of TSE HDPE Pipe 90 mm. | 2027-01-02 → 2027-01-09 (+7d) | 2027-01-25 → 2027-02-01 (+7d) | 83d → 77d |
| 3 | **Valve Chambers & Valves** | 2026-10-12 → 2026-10-19 (+7d) | 2027-03-31 → 2027-04-07 (+7d) |  |
| 3 | **Excavation** | 2026-10-12 → 2026-10-19 (+7d) | 2027-01-02 → 2027-01-09 (+7d) |  |
| SDR-2-CON-TS-ZA-3310 | Excavation for Valve Chambers Section 1 | 2026-10-12 → 2026-10-19 (+7d) | 2026-11-03 → 2026-11-10 (+7d) | 81d → 78d |
| SDR-2-CON-TS-ZA-2760 | Excavation for Valve Chambers Section 2 | 2026-12-10 → 2026-12-17 (+7d) | 2027-01-02 → 2027-01-09 (+7d) | 50d → 47d |
| 1 | **bedding Works** | 2027-01-03 → 2027-01-10 (+7d) | 2027-01-23 → 2027-01-30 (+7d) |  |
| SDR-2-CON-TS-ZA-2750 | Sand bedding for Valve Chambers | 2027-01-03 → 2027-01-10 (+7d) | 2027-01-23 → 2027-01-30 (+7d) | 50d → 47d |
| 4 | **Install Chambers & Valves** | 2027-01-24 → 2027-01-31 (+7d) | 2027-02-16 → 2027-02-24 (+8d) |  |
| SDR-2-CON-TS-ZA-2770 | Valve Chambers & Valves Installation | 2027-01-24 → 2027-01-31 (+7d) | 2027-02-16 → 2027-02-24 (+8d) | 50d → 47d |
| 5 | **Testing** | 2027-02-17 → 2027-02-25 (+8d) | 2027-03-02 → 2027-03-14 (+12d) |  |
| SDR-2-CON-TS-ZA-2780 | Testing Chambers & Valves Installation | 2027-02-17 → 2027-02-25 (+8d) | 2027-03-02 → 2027-03-14 (+12d) | 50d → 47d |
| 6 | **Backfilling** | 2027-03-03 → 2027-03-15 (+12d) | 2027-03-31 → 2027-04-07 (+7d) |  |

| ID | Task | Start | Finish | Total float |
| --- | --- | --- | --- | --- |
| SDR-2-CON-TS-ZA-2790 | Backfilling Chambers & Valves Installation | 2027-03-03 → 2027-03-15 (+12d) | 2027-03-31 → 2027-04-07 (+7d) | 50d → 58d |
| 7 | **TSE NETWORK IN ( PH2-A-MCG0 )** | 2026-10-12 → 2026-10-19 (+7d) | 2027-03-01 → 2027-03-08 (+7d) |  |
| 6 | **Pipes Work** | 2026-10-12 → 2026-10-19 (+7d) | 2027-02-17 → 2027-02-25 (+8d) |  |
| 1 | **Excavation** | 2026-10-12 → 2026-10-19 (+7d) | 2026-11-26 → 2026-12-03 (+7d) |  |
| SDR-2-CON-TS-ZA-3320 | Excavation for TSE HDPE Pipes 90 mm Section 1 | 2026-10-12 → 2026-10-19 (+7d) | 2026-11-03 → 2026-11-10 (+7d) | 37d → 31d |
| SDR-2-CON-TS-ZA-2800 | Excavation for TSE HDPE Pipes 90 mm Section 2 | 2026-11-04 → 2026-11-11 (+7d) | 2026-11-26 → 2026-12-03 (+7d) | 55d → 49d |
| 3 | **bedding Works** | 2026-11-28 → 2026-12-05 (+7d) | 2026-12-17 → 2026-12-24 (+7d) |  |
| SDR-2-CON-TS-ZA-2830 | Sand bedding for TSE HDPE Pipes 90 mm | 2026-11-28 → 2026-12-05 (+7d) | 2026-12-17 → 2026-12-24 (+7d) | 55d → 49d |
| 2 | **Pipes Laying** | 2026-12-19 → 2026-12-26 (+7d) | 2027-01-11 → 2027-01-18 (+7d) |  |
| SDR-2-CON-TS-ZA-2810 | Install TSE 90 mm HDPE Pipe | 2026-12-19 → 2026-12-26 (+7d) | 2027-01-11 → 2027-01-18 (+7d) | 55d → 49d |
| 5 | **Testing** | 2027-01-12 → 2027-01-19 (+7d) | 2027-01-26 → 2027-02-02 (+7d) |  |
| SDR-2-CON-TS-ZA-2820 | Testing of TSE HDPE Pipe 90 mm. | 2027-01-12 → 2027-01-19 (+7d) | 2027-01-26 → 2027-02-02 (+7d) | 55d → 49d |
| 4 | **Backfilling** | 2027-01-27 → 2027-02-03 (+7d) | 2027-02-17 → 2027-02-25 (+8d) |  |
| SDR-2-CON-TS-ZA-2840 | Backfilling of TSE HDPE Pipe 90 mm. | 2027-01-27 → 2027-02-03 (+7d) | 2027-02-17 → 2027-02-25 (+8d) | 55d → 49d |
| 3 | **Valve Chambers & Valves** | 2026-10-12 → 2026-10-19 (+7d) | 2027-03-01 → 2027-03-08 (+7d) |  |
| 3 | **Excavation** | 2026-10-12 → 2026-10-19 (+7d) | 2026-11-26 → 2026-12-03 (+7d) |  |
| SDR-2-CON-TS-ZA-3330 | Excavation for Valve Chambers Section 1 | 2026-10-12 → 2026-10-19 (+7d) | 2026-11-03 → 2026-11-10 (+7d) | 54d → 48d |
| SDR-2-CON-TS-ZA-2860 | Excavation for Valve Chambers Section 2 | 2026-11-04 → 2026-11-11 (+7d) | 2026-11-26 → 2026-12-03 (+7d) | 54d → 48d |
| 1 | **bedding Works** | 2026-11-28 → 2026-12-05 (+7d) | 2026-12-19 → 2026-12-26 (+7d) |  |
| SDR-2-CON-TS-ZA-2850 | Sand bedding for Valve Chambers | 2026-11-28 → 2026-12-05 (+7d) | 2026-12-19 → 2026-12-26 (+7d) | 54d → 48d |
| 4 | **Install Chambers & Valves** | 2026-12-20 → 2026-12-27 (+7d) | 2027-01-12 → 2027-01-19 (+7d) |  |
| SDR-2-CON-TS-ZA-2870 | Valve Chambers & Valves Installation | 2026-12-20 → 2026-12-27 (+7d) | 2027-01-12 → 2027-01-19 (+7d) | 54d → 48d |
| 5 | **Testing** | 2027-01-13 → 2027-01-20 (+7d) | 2027-02-04 → 2027-02-11 (+7d) |  |
| SDR-2-CON-TS-ZA-2880 | Testing Chambers & Valves Installation | 2027-01-13 → 2027-01-20 (+7d) | 2027-02-04 → 2027-02-11 (+7d) | 54d → 48d |
| 6 | **Backfilling** | 2027-02-06 → 2027-02-13 (+7d) | 2027-03-01 → 2027-03-08 (+7d) |  |
| SDR-2-CON-TS-ZA-2890 | Backfilling Chambers & Valves Installation | 2027-02-06 → 2027-02-13 (+7d) | 2027-03-01 → 2027-03-08 (+7d) | 54d → 48d |
| 8 | **TSE NETWORK IN ( PH2-A-MCH0 )** | 2026-10-12 → 2026-10-19 (+7d) | 2027-04-14 → 2027-04-21 (+7d) |  |
| 6 | **Pipes Work** | 2026-10-12 → 2026-10-19 (+7d) | 2027-04-08 → 2027-04-15 (+7d) |  |
| 1 | **Excavation** | 2026-10-12 → 2026-10-19 (+7d) | 2027-01-09 → 2027-01-16 (+7d) |  |
| SDR-2-CON-TS-ZA-3340 | Excavation for TSE HDPE Pipes 250 mm Section 1 | 2026-10-12 → 2026-10-19 (+7d) | 2026-11-03 → 2026-11-10 (+7d) | 57d → 51d |
| SDR-2-CON-TS-ZA-1630 | Excavation for TSE HDPE Pipes 250 mm Section 2 | 2026-12-17 → 2026-12-24 (+7d) | 2027-01-09 → 2027-01-16 (+7d) | 20d → 14d |
| 7 | **bedding Works** | 2027-01-10 → 2027-01-17 (+7d) | 2027-02-02 → 2027-02-09 (+7d) |  |
| SDR-2-CON-TS-ZA-1960 | Sand bedding for TSE HDPE Pipes 250 mm | 2027-01-10 → 2027-01-17 (+7d) | 2027-02-02 → 2027-02-09 (+7d) | 25d → 19d |
| 2 | **Pipes Laying** | 2027-02-03 → 2027-02-10 (+7d) | 2027-02-28 → 2027-03-07 (+7d) |  |
| SDR-2-CON-TS-ZA-1640 | Install TSE 250 mm HDPE Pipe | 2027-02-03 → 2027-02-10 (+7d) | 2027-02-28 → 2027-03-07 (+7d) | 25d → 19d |
| 5 | **Testing** | 2027-03-01 → 2027-03-08 (+7d) | 2027-03-23 → 2027-03-30 (+7d) |  |
| SDR-2-CON-TS-ZA-1710 | Testing of TSE HDPE Pipe 250 mm. | 2027-03-01 → 2027-03-08 (+7d) | 2027-03-23 → 2027-03-30 (+7d) | 25d → 19d |
| 8 | **Backfilling** | 2027-03-24 → 2027-03-31 (+7d) | 2027-04-08 → 2027-04-15 (+7d) |  |
| SDR-2-CON-TS-ZA-1970 | Backfilling of TSE HDPE Pipe 250 mm. | 2027-03-24 → 2027-03-31 (+7d) | 2027-04-08 → 2027-04-15 (+7d) | 25d → 19d |
| 3 | **Valve Chambers & Valves** | 2026-10-12 → 2026-10-19 (+7d) | 2027-04-14 → 2027-04-21 (+7d) |  |
| 3 | **Excavation** | 2026-10-12 → 2026-10-19 (+7d) | 2027-01-09 → 2027-01-16 (+7d) |  |
| SDR-2-CON-TS-ZA-3350 | Excavation for Valve Chambers Section 1 | 2026-10-12 → 2026-10-19 (+7d) | 2026-11-03 → 2026-11-10 (+7d) | 57d → 51d |
| SDR-2-CON-TS-ZA-2110 | Excavation for Valve Chambers Section 2 | 2026-12-17 → 2026-12-24 (+7d) | 2027-01-09 → 2027-01-16 (+7d) | 20d → 14d |
| 1 | **bedding Works** | 2027-01-10 → 2027-01-17 (+7d) | 2027-02-02 → 2027-02-09 (+7d) |  |
| SDR-2-CON-TS-ZA-2100 | Sand bedding for Valve Chambers | 2027-01-10 → 2027-01-17 (+7d) | 2027-02-02 → 2027-02-09 (+7d) | 20d → 14d |
| 4 | **Install Chambers & Valves** | 2027-02-03 → 2027-02-10 (+7d) | 2027-02-28 → 2027-03-07 (+7d) |  |
| SDR-2-CON-TS-ZA-2120 | Valve Chambers & Valves Installation | 2027-02-03 → 2027-02-10 (+7d) | 2027-02-28 → 2027-03-07 (+7d) | 20d → 14d |
| 5 | **Testing** | 2027-03-01 → 2027-03-08 (+7d) | 2027-03-22 → 2027-03-29 (+7d) |  |
| SDR-2-CON-TS-ZA-2130 | Testing Chambers & Valves Installation | 2027-03-01 → 2027-03-08 (+7d) | 2027-03-22 → 2027-03-29 (+7d) | 20d → 14d |
| 6 | **Backfilling** | 2027-03-23 → 2027-03-30 (+7d) | 2027-04-14 → 2027-04-21 (+7d) |  |
| SDR-2-CON-TS-ZA-2140 | Backfilling Chambers & Valves Installation | 2027-03-23 → 2027-03-30 (+7d) | 2027-04-14 → 2027-04-21 (+7d) | 20d → 14d |
| 9 | **TSE NETWORK IN ( PH2-ART-MC00 )** |  | 2027-03-25 → 2027-04-01 (+7d) |  |
| 6 | **Pipes Work** |  | 2027-02-25 → 2027-03-04 (+7d) |  |
| 1 | **Excavation** |  | 2026-11-26 → 2026-12-03 (+7d) |  |
| SDR-2-CON-TS-ZA-1720 | Excavation for TSE HDPE Pipes 450 mm Section 2 |  | 2026-11-26 → 2026-12-03 (+7d) | 57d → 51d |
| 7 | **bedding Works** | 2026-11-28 → 2026-12-05 (+7d) | 2026-12-21 → 2026-12-28 (+7d) |  |
| SDR-2-CON-TS-ZA-1980 | Sand bedding for TSE HDPE Pipes 450 mm | 2026-11-28 → 2026-12-05 (+7d) | 2026-12-21 → 2026-12-28 (+7d) | 57d → 51d |
| 2 | **Pipes Laying** | 2026-12-22 → 2026-12-29 (+7d) | 2027-01-14 → 2027-01-21 (+7d) |  |
| SDR-2-CON-TS-ZA-1730 | Install TSE 450 mm HDPE Pipe | 2026-12-22 → 2026-12-29 (+7d) | 2027-01-14 → 2027-01-21 (+7d) | 57d → 51d |
| 5 | **Testing** | 2027-01-16 → 2027-01-23 (+7d) | 2027-02-01 → 2027-02-08 (+7d) |  |
| SDR-2-CON-TS-ZA-1800 | Testing of TSE HDPE Pipe 450 mm. | 2027-01-16 → 2027-01-23 (+7d) | 2027-02-01 → 2027-02-08 (+7d) | 57d → 51d |
| 8 | **Backfilling** | 2027-02-02 → 2027-02-09 (+7d) | 2027-02-25 → 2027-03-04 (+7d) |  |
| SDR-2-CON-TS-ZA-1990 | Backfilling of TSE HDPE Pipe 450 mm. | 2027-02-02 → 2027-02-09 (+7d) | 2027-02-25 → 2027-03-04 (+7d) | 57d → 51d |
| 3 | **Valve Chambers & Valves** | 2026-11-04 → 2026-11-11 (+7d) | 2027-03-25 → 2027-04-01 (+7d) |  |
| 3 | **Excavation** | 2026-11-04 → 2026-11-11 (+7d) | 2026-12-20 → 2026-12-27 (+7d) |  |
| SDR-2-CON-TS-ZA-3370 | Excavation for Valve Chambers Section 1 | 2026-11-04 → 2026-11-11 (+7d) | 2026-11-26 → 2026-12-03 (+7d) | 37d → 31d |
| SDR-2-CON-TS-ZA-2160 | Excavation for Valve Chambers Section 2 | 2026-11-28 → 2026-12-05 (+7d) | 2026-12-20 → 2026-12-27 (+7d) | 37d → 31d |
| 1 | **bedding Works** | 2026-12-21 → 2026-12-28 (+7d) | 2027-01-13 → 2027-01-20 (+7d) |  |
| SDR-2-CON-TS-ZA-2150 | Sand bedding for Valve Chambers | 2026-12-21 → 2026-12-28 (+7d) | 2027-01-13 → 2027-01-20 (+7d) | 37d → 31d |
| 4 | **Install Chambers & Valves** | 2027-01-14 → 2027-01-21 (+7d) | 2027-02-07 → 2027-02-14 (+7d) |  |

| ID | Task | Start | Finish | Total float |
| --- | --- | --- | --- | --- |
| SDR-2-CON-TS-ZA-2170 | Valve Chambers & Valves Installation | 2027-01-14 → 2027-01-21 (+7d) | 2027-02-07 → 2027-02-14 (+7d) | 37d → 31d |
| 5 | **Testing** | 2027-02-08 → 2027-02-15 (+7d) | 2027-02-25 → 2027-03-04 (+7d) |  |
| SDR-2-CON-TS-ZA-2180 | Testing Chambers & Valves Installation | 2027-02-08 → 2027-02-15 (+7d) | 2027-02-25 → 2027-03-04 (+7d) | 37d → 31d |
| 6 | **Backfilling** | 2027-02-27 → 2027-03-06 (+7d) | 2027-03-25 → 2027-04-01 (+7d) |  |
| SDR-2-CON-TS-ZA-2190 | Backfilling Chambers & Valves Installation | 2027-02-27 → 2027-03-06 (+7d) | 2027-03-25 → 2027-04-01 (+7d) | 37d → 31d |
| 10 | **TSE NETWORK IN ( PH2-ART-MC10 )** |  | 2027-03-15 → 2027-03-22 (+7d) |  |
| 6 | **Pipes Work** |  | 2026-12-14 → 2026-12-21 (+7d) |  |
| 7 | **bedding Works** |  | 2026-12-14 → 2026-12-21 (+7d) |  |
| SDR-2-CON-TS-ZA-3130 | Sand bedding for TSE HDPE Pipes 450 mm |  | 2026-12-14 → 2026-12-21 (+7d) | 119d → 113d |
| 2 | **Pipes Laying** |  | 2026-12-14 → 2026-12-21 (+7d) |  |
| SDR-2-CON-TS-ZA-3110 | Install TSE 450 mm HDPE Pipe |  | 2026-12-14 → 2026-12-21 (+7d) | 119d → 113d |
| 5 | **Testing** |  | 2026-12-14 → 2026-12-21 (+7d) |  |
| SDR-2-CON-TS-ZA-3120 | Testing of TSE HDPE Pipe 450 mm. |  | 2026-12-14 → 2026-12-21 (+7d) | 119d → 113d |
| 8 | **Backfilling** |  | 2026-12-14 → 2026-12-21 (+7d) |  |
| SDR-2-CON-TS-ZA-3140 | Backfilling of TSE HDPE Pipe 450 mm. |  | 2026-12-14 → 2026-12-21 (+7d) | 119d → 113d |
| 3 | **Valve Chambers & Valves** | 2026-11-04 → 2026-11-11 (+7d) | 2027-03-15 → 2027-03-22 (+7d) |  |
| 3 | **Excavation** | 2026-11-04 → 2026-11-11 (+7d) | 2026-12-19 → 2026-12-26 (+7d) |  |
| SDR-2-CON-TS-ZA-3390 | Excavation for Valve Chambers Section 1 | 2026-11-04 → 2026-11-11 (+7d) | 2026-11-26 → 2026-12-03 (+7d) | 46d → 40d |
| SDR-2-CON-TS-ZA-3160 | Excavation for Valve Chambers Section 2 | 2026-11-28 → 2026-12-05 (+7d) | 2026-12-19 → 2026-12-26 (+7d) | 46d → 40d |
| 1 | **bedding Works** | 2026-12-20 → 2026-12-27 (+7d) | 2027-01-09 → 2027-01-16 (+7d) |  |
| SDR-2-CON-TS-ZA-3150 | Sand bedding for Valve Chambers | 2026-12-20 → 2026-12-27 (+7d) | 2027-01-09 → 2027-01-16 (+7d) | 46d → 40d |
| 4 | **Install Chambers & Valves** | 2027-01-10 → 2027-01-17 (+7d) | 2027-02-02 → 2027-02-09 (+7d) |  |
| SDR-2-CON-TS-ZA-3170 | Valve Chambers & Valves Installation | 2027-01-10 → 2027-01-17 (+7d) | 2027-02-02 → 2027-02-09 (+7d) | 46d → 40d |
| 5 | **Testing** | 2027-02-03 → 2027-02-10 (+7d) | 2027-02-14 → 2027-02-21 (+7d) |  |
| SDR-2-CON-TS-ZA-3180 | Testing Chambers & Valves Installation | 2027-02-03 → 2027-02-10 (+7d) | 2027-02-14 → 2027-02-21 (+7d) | 46d → 40d |
| 6 | **Backfilling** | 2027-02-15 → 2027-02-23 (+8d) | 2027-03-15 → 2027-03-22 (+7d) |  |
| SDR-2-CON-TS-ZA-3190 | Backfilling Chambers & Valves Installation | 2027-02-15 → 2027-02-23 (+8d) | 2027-03-15 → 2027-03-22 (+7d) | 46d → 40d |
| ZG | **ZONE G** |  | 2027-05-31 → 2027-06-10 (+10d) |  |
| 1 | **TSE NETWORK IN ( PH2-G-MCA0 )** |  | 2027-02-24 → 2027-03-03 (+7d) |  |
| 6 | **Pipes Work** |  | 2026-11-19 → 2026-11-26 (+7d) |  |
| 1 | **Excavation** |  | 2026-10-12 → 2026-10-19 (+7d) |  |
| SDR-2-CON-TS-ZA-2300 | Excavation for TSE HDPE Pipes 225 mm Section 2 |  | 2026-10-12 → 2026-10-19 (+7d) | 78d → 72d |
| SDR-2-CON-TS-ZA-3400 | Excavation for TSE HDPE Pipes 225 mm Section 1 |  | 2026-10-12 → 2026-10-19 (+7d) | 58d → 52d |
| 6 | **bedding Works** |  | 2026-10-12 → 2026-10-19 (+7d) |  |
| SDR-2-CON-TS-ZA-2380 | Sand bedding for TSE HDPE Pipes 225 mm |  | 2026-10-12 → 2026-10-19 (+7d) | 140d → 134d |
| 2 | **Pipes Laying** |  | 2026-10-12 → 2026-10-19 (+7d) |  |
| SDR-2-CON-TS-ZA-2310 | Install TSE 225 mm HDPE Pipe |  | 2026-10-12 → 2026-10-19 (+7d) | 140d → 134d |
| 5 | **Testing** | 2026-10-13 → 2026-10-20 (+7d) | 2026-10-27 → 2026-11-03 (+7d) |  |
| SDR-2-CON-TS-ZA-2370 | Testing of TSE HDPE Pipe 225 mm. | 2026-10-13 → 2026-10-20 (+7d) | 2026-10-27 → 2026-11-03 (+7d) | 140d → 134d |
| 7 | **Backfilling** | 2026-10-28 → 2026-11-04 (+7d) | 2026-11-19 → 2026-11-26 (+7d) |  |
| SDR-2-CON-TS-ZA-2390 | Backfilling of TSE HDPE Pipe 225 mm. | 2026-10-28 → 2026-11-04 (+7d) | 2026-11-19 → 2026-11-26 (+7d) | 140d → 134d |
| 3 | **Valve Chambers & Valves** | 2026-10-12 → 2026-10-19 (+7d) | 2027-02-24 → 2027-03-03 (+7d) |  |
| 3 | **Excavation** | 2026-10-12 → 2026-10-19 (+7d) | 2026-11-26 → 2026-12-03 (+7d) |  |
| SDR-2-CON-TS-ZA-3410 | Excavation for Valve Chambers Section 1 | 2026-10-12 → 2026-10-19 (+7d) | 2026-11-03 → 2026-11-10 (+7d) | 58d → 52d |
| SDR-2-CON-TS-ZA-2330 | Excavation for Valve Chambers Section 2 | 2026-11-04 → 2026-11-11 (+7d) | 2026-11-26 → 2026-12-03 (+7d) | 58d → 52d |
| 1 | **bedding Works** | 2026-11-28 → 2026-12-05 (+7d) | 2026-12-21 → 2026-12-28 (+7d) |  |
| SDR-2-CON-TS-ZA-2320 | Sand bedding for Valve Chambers | 2026-11-28 → 2026-12-05 (+7d) | 2026-12-21 → 2026-12-28 (+7d) | 58d → 52d |
| 4 | **Install Chambers & Valves** | 2026-12-22 → 2026-12-29 (+7d) | 2027-01-14 → 2027-01-21 (+7d) |  |
| SDR-2-CON-TS-ZA-2340 | Valve Chambers & Valves Installation | 2026-12-22 → 2026-12-29 (+7d) | 2027-01-14 → 2027-01-21 (+7d) | 58d → 52d |
| 5 | **Testing** | 2027-01-16 → 2027-01-23 (+7d) | 2027-01-30 → 2027-02-06 (+7d) |  |
| SDR-2-CON-TS-ZA-2350 | Testing Chambers & Valves Installation | 2027-01-16 → 2027-01-23 (+7d) | 2027-01-30 → 2027-02-06 (+7d) | 58d → 52d |
| 6 | **Backfilling** | 2027-02-01 → 2027-02-08 (+7d) | 2027-02-24 → 2027-03-03 (+7d) |  |
| SDR-2-CON-TS-ZA-2360 | Backfilling Chambers & Valves Installation | 2027-02-01 → 2027-02-08 (+7d) | 2027-02-24 → 2027-03-03 (+7d) | 58d → 52d |
| 2 | **TSE NETWORK IN ( PH2-G-MCE0 )** |  | 2027-05-04 → 2027-05-11 (+7d) |  |
| 6 | **Pipes Work** |  | 2027-01-05 → 2027-01-12 (+7d) |  |
| 1 | **Excavation** |  | 2026-10-12 → 2026-10-19 (+7d) |  |
| SDR-2-CON-TS-ZA-2400 | Excavation for TSE HDPE Pipes 125 mm Section 2 |  | 2026-10-12 → 2026-10-19 (+7d) | 87d → 81d |
| SDR-2-CON-TS-ZA-3420 | Excavation for TSE HDPE Pipes 125 mm Section 1 |  | 2026-10-12 → 2026-10-19 (+7d) | 87d → 81d |
| 3 | **bedding Works** | 2026-10-13 → 2026-10-20 (+7d) | 2026-11-05 → 2026-11-12 (+7d) |  |
| SDR-2-CON-TS-ZA-2430 | Sand bedding for TSE HDPE Pipes 125 mm | 2026-10-13 → 2026-10-20 (+7d) | 2026-11-05 → 2026-11-12 (+7d) | 100d → 94d |
| 2 | **Pipes Laying** | 2026-11-07 → 2026-11-14 (+7d) | 2026-11-30 → 2026-12-07 (+7d) |  |
| SDR-2-CON-TS-ZA-2410 | Install TSE 125 mm HDPE Pipe | 2026-11-07 → 2026-11-14 (+7d) | 2026-11-30 → 2026-12-07 (+7d) | 100d → 94d |
| 5 | **Testing** | 2026-12-01 → 2026-12-08 (+7d) | 2026-12-12 → 2026-12-19 (+7d) |  |
| SDR-2-CON-TS-ZA-2420 | Testing of TSE HDPE Pipe 125 mm. | 2026-12-01 → 2026-12-08 (+7d) | 2026-12-12 → 2026-12-19 (+7d) | 100d → 94d |
| 4 | **Backfilling** | 2026-12-13 → 2026-12-20 (+7d) | 2027-01-05 → 2027-01-12 (+7d) |  |
| SDR-2-CON-TS-ZA-2440 | Backfilling of TSE HDPE Pipe 125 mm. | 2026-12-13 → 2026-12-20 (+7d) | 2027-01-05 → 2027-01-12 (+7d) | 100d → 94d |
| 3 | **Valve Chambers & Valves** | 2026-10-13 → 2026-10-20 (+7d) | 2027-05-04 → 2027-05-11 (+7d) |  |
| 3 | **Excavation** | 2026-10-13 → 2026-10-20 (+7d) | 2026-11-30 → 2026-12-07 (+7d) |  |
| SDR-2-CON-TS-ZA-3430 | Excavation for Valve Chambers Section 1 | 2026-10-13 → 2026-10-20 (+7d) | 2026-11-05 → 2026-11-12 (+7d) | 58d → 66d |
| SDR-2-CON-TS-ZA-2460 | Excavation for Valve Chambers Section 2 | 2026-11-07 → 2026-11-14 (+7d) | 2026-11-30 → 2026-12-07 (+7d) | 58d → 66d |

| ID | Task | Start | Finish | Total float |
| --- | --- | --- | --- | --- |
| 1 | **bedding Works** | 2026-12-01 → 2026-12-08 (+7d) | 2026-12-24 → 2026-12-31 (+7d) |  |
| SDR-2-CON-TS-ZA-2450 | Sand bedding for Valve Chambers | 2026-12-01 → 2026-12-08 (+7d) | 2026-12-24 → 2026-12-31 (+7d) | 58d → 66d |
| 4 | **Install Chambers & Valves** | 2027-03-01 → 2027-03-08 (+7d) | 2027-03-29 → 2027-04-05 (+7d) |  |
| SDR-2-CON-TS-ZA-2470 | Valve Chambers & Valves Installation | 2027-03-01 → 2027-03-08 (+7d) | 2027-03-29 → 2027-04-05 (+7d) | 3d → 11d |
| 5 | **Testing** | 2027-03-30 → 2027-04-06 (+7d) | 2027-04-08 → 2027-04-15 (+7d) |  |
| SDR-2-CON-TS-ZA-2480 | Testing Chambers & Valves Installation | 2027-03-30 → 2027-04-06 (+7d) | 2027-04-08 → 2027-04-15 (+7d) | 3d → 11d |
| 6 | **Backfilling** | 2027-04-11 → 2027-04-18 (+7d) | 2027-05-04 → 2027-05-11 (+7d) |  |
| SDR-2-CON-TS-ZA-2490 | Backfilling Chambers & Valves Installation | 2027-04-11 → 2027-04-18 (+7d) | 2027-05-04 → 2027-05-11 (+7d) | 3d → 11d |
| 3 | **TSE NETWORK IN ( PH2-G-MCF0 )** |  | 2027-04-28 → 2027-05-05 (+7d) |  |
| 6 | **Pipes Work** |  | 2027-04-21 → 2027-04-28 (+7d) |  |
| 1 | **Excavation** |  | 2026-12-14 → 2026-12-21 (+7d) |  |
| SDR-2-CON-TS-ZA-2900 | Excavation for TSE HDPE Pipes 90 mm Section 2 |  | 2026-12-14 → 2026-12-21 (+7d) | 15d → 9d |
| SDR-2-CON-TS-ZA-3440 | Excavation for TSE HDPE Pipes 90 mm Section 1 |  | 2026-10-12 → 2026-10-19 (+7d) | 53d → 47d |
| 3 | **bedding Works** | 2026-12-27 → 2027-01-03 (+7d) | 2027-01-19 → 2027-01-26 (+7d) |  |
| SDR-2-CON-TS-ZA-2930 | Sand bedding for TSE HDPE Pipes 90 mm | 2026-12-27 → 2027-01-03 (+7d) | 2027-01-19 → 2027-01-26 (+7d) | 26d → 20d |
| 2 | **Pipes Laying** | 2027-01-20 → 2027-01-27 (+7d) | 2027-02-13 → 2027-02-20 (+7d) |  |
| SDR-2-CON-TS-ZA-2910 | Install TSE 90 mm HDPE Pipe | 2027-01-20 → 2027-01-27 (+7d) | 2027-02-13 → 2027-02-20 (+7d) | 26d → 20d |
| 5 | **Testing** | 2027-03-01 → 2027-03-08 (+7d) | 2027-03-28 → 2027-04-04 (+7d) |  |
| SDR-2-CON-TS-ZA-2920 | Testing of TSE HDPE Pipe 90 mm. | 2027-03-01 → 2027-03-08 (+7d) | 2027-03-28 → 2027-04-04 (+7d) | 14d → 8d |
| 4 | **Backfilling** | 2027-03-29 → 2027-04-05 (+7d) | 2027-04-21 → 2027-04-28 (+7d) |  |
| SDR-2-CON-TS-ZA-2940 | Backfilling of TSE HDPE Pipe 90 mm. | 2027-03-29 → 2027-04-05 (+7d) | 2027-04-21 → 2027-04-28 (+7d) | 14d → 8d |
| 3 | **Valve Chambers & Valves** | 2026-10-12 → 2026-10-19 (+7d) | 2027-04-28 → 2027-05-05 (+7d) |  |
| 3 | **Excavation** | 2026-10-12 → 2026-10-19 (+7d) | 2026-11-26 → 2026-12-03 (+7d) |  |
| SDR-2-CON-TS-ZA-3450 | Excavation for Valve Chambers Section 1 | 2026-10-12 → 2026-10-19 (+7d) | 2026-11-03 → 2026-11-10 (+7d) | 53d → 47d |
| SDR-2-CON-TS-ZA-2960 | Excavation for Valve Chambers Section 2 | 2026-11-04 → 2026-11-11 (+7d) | 2026-11-26 → 2026-12-03 (+7d) | 53d → 47d |
| 1 | **bedding Works** | 2027-01-19 → 2027-01-26 (+7d) | 2027-02-08 → 2027-02-15 (+7d) |  |
| SDR-2-CON-TS-ZA-2950 | Sand bedding for Valve Chambers | 2027-01-19 → 2027-01-26 (+7d) | 2027-02-08 → 2027-02-15 (+7d) | 8d → 2d |
| 4 | **Install Chambers & Valves** | 2027-02-09 → 2027-02-16 (+7d) | 2027-03-06 → 2027-03-17 (+11d) |  |
| SDR-2-CON-TS-ZA-2970 | Valve Chambers & Valves Installation | 2027-02-09 → 2027-02-16 (+7d) | 2027-03-06 → 2027-03-17 (+11d) | 8d → 2d |
| 5 | **Testing** | 2027-03-07 → 2027-03-18 (+11d) | 2027-04-03 → 2027-04-10 (+7d) |  |
| SDR-2-CON-TS-ZA-2980 | Testing Chambers & Valves Installation | 2027-03-07 → 2027-03-18 (+11d) | 2027-04-03 → 2027-04-10 (+7d) | 8d → 2d |
| 6 | **Backfilling** | 2027-04-05 → 2027-04-12 (+7d) | 2027-04-28 → 2027-05-05 (+7d) |  |
| SDR-2-CON-TS-ZA-2990 | Backfilling Chambers & Valves Installation | 2027-04-05 → 2027-04-12 (+7d) | 2027-04-28 → 2027-05-05 (+7d) | 8d → 2d |
| 4 | **TSE NETWORK IN ( PH2-G-MCG0 )** |  | 2027-05-24 → 2027-05-31 (+7d) |  |
| 6 | **Pipes Work** |  | 2027-01-24 → 2027-01-31 (+7d) |  |
| 1 | **Excavation** |  | 2026-10-12 → 2026-10-19 (+7d) |  |
| SDR-2-CON-TS-ZA-3000 | Excavation for TSE HDPE Pipes 90 mm Section 2 |  | 2026-10-12 → 2026-10-19 (+7d) | 75d → 69d |
| 3 | **bedding Works** | 2026-10-13 → 2026-10-20 (+7d) | 2026-11-05 → 2026-11-12 (+7d) |  |
| SDR-2-CON-TS-ZA-3030 | Sand bedding for TSE HDPE Pipes 90 mm | 2026-10-13 → 2026-10-20 (+7d) | 2026-11-05 → 2026-11-12 (+7d) | 97d → 91d |
| 2 | **Pipes Laying** | 2026-11-07 → 2026-11-14 (+7d) | 2026-11-30 → 2026-12-07 (+7d) |  |
| SDR-2-CON-TS-ZA-3010 | Install TSE 90 mm HDPE Pipe | 2026-11-07 → 2026-11-14 (+7d) | 2026-11-30 → 2026-12-07 (+7d) | 97d → 91d |
| 5 | **Testing** | 2026-12-01 → 2026-12-08 (+7d) | 2026-12-15 → 2026-12-22 (+7d) |  |
| SDR-2-CON-TS-ZA-3020 | Testing of TSE HDPE Pipe 90 mm. | 2026-12-01 → 2026-12-08 (+7d) | 2026-12-15 → 2026-12-22 (+7d) | 97d → 91d |
| 4 | **Backfilling** | 2026-12-31 → 2027-01-07 (+7d) | 2027-01-24 → 2027-01-31 (+7d) |  |
| SDR-2-CON-TS-ZA-3040 | Backfilling of TSE HDPE Pipe 90 mm. | 2026-12-31 → 2027-01-07 (+7d) | 2027-01-24 → 2027-01-31 (+7d) | 84d → 78d |
| 3 | **Valve Chambers & Valves** | 2026-10-12 → 2026-10-19 (+7d) | 2027-05-24 → 2027-05-31 (+7d) |  |
| 3 | **Excavation** | 2026-10-12 → 2026-10-19 (+7d) | 2026-11-26 → 2026-12-03 (+7d) |  |
| SDR-2-CON-TS-ZA-3470 | Excavation for Valve Chambers Section 1 | 2026-10-12 → 2026-10-19 (+7d) | 2026-11-03 → 2026-11-10 (+7d) | 75d → 83d |
| SDR-2-CON-TS-ZA-3060 | Excavation for Valve Chambers Section 2 | 2026-11-04 → 2026-11-11 (+7d) | 2026-11-26 → 2026-12-03 (+7d) | 75d → 83d |
| 1 | **bedding Works** | 2027-01-19 → 2027-01-26 (+7d) | 2027-02-11 → 2027-02-18 (+7d) |  |
| SDR-2-CON-TS-ZA-3050 | Sand bedding for Valve Chambers | 2027-01-19 → 2027-01-26 (+7d) | 2027-02-11 → 2027-02-18 (+7d) | 30d → 38d |
| 4 | **Install Chambers & Valves** | 2027-03-15 → 2027-03-22 (+7d) | 2027-04-07 → 2027-04-14 (+7d) |  |
| SDR-2-CON-TS-ZA-3070 | Valve Chambers & Valves Installation | 2027-03-15 → 2027-03-22 (+7d) | 2027-04-07 → 2027-04-14 (+7d) | 9d → 17d |
| 5 | **Testing** | 2027-04-01 → 2027-04-08 (+7d) | 2027-04-22 → 2027-04-29 (+7d) |  |
| SDR-2-CON-TS-ZA-3080 | Testing Chambers & Valves Installation | 2027-04-01 → 2027-04-08 (+7d) | 2027-04-22 → 2027-04-29 (+7d) | 9d → 17d |
| 6 | **Backfilling** | 2027-04-25 → 2027-05-02 (+7d) | 2027-05-24 → 2027-05-31 (+7d) |  |
| SDR-2-CON-TS-ZA-3090 | Backfilling Chambers & Valves Installation | 2027-04-25 → 2027-05-02 (+7d) | 2027-05-24 → 2027-05-31 (+7d) | 9d → 17d |
| 5 | **TSE NETWORK IN ( PH2-G-MCZ0 )** |  | 2027-05-31 → 2027-06-10 (+10d) |  |
| 6 | **Pipes Work** |  | 2027-05-31 → 2027-06-10 (+10d) |  |
| 1 | **Excavation** |  | 2026-10-12 → 2026-10-19 (+7d) |  |
| SDR-2-CON-TS-ZA-2500 | Excavation for TSE HDPE Pipes 125 mm Section 2 |  | 2026-10-12 → 2026-10-19 (+7d) | 74d → 68d |
| SDR-2-CON-TS-ZA-3480 | Excavation for TSE HDPE Pipes 125 mm Section 1 |  | 2026-10-12 → 2026-10-19 (+7d) | 58d → 52d |
| 3 | **bedding Works** | 2027-02-03 → 2027-02-10 (+7d) | 2027-02-28 → 2027-03-07 (+7d) |  |
| SDR-2-CON-TS-ZA-2530 | Sand bedding for TSE HDPE Pipes 125 mm | 2027-02-03 → 2027-02-10 (+7d) | 2027-02-28 → 2027-03-07 (+7d) | 3d → 8d |
| 2 | **Pipes Laying** | 2027-03-01 → 2027-03-08 (+7d) | 2027-03-29 → 2027-04-05 (+7d) |  |
| SDR-2-CON-TS-ZA-2510 | Install TSE 125 mm HDPE Pipe | 2027-03-01 → 2027-03-08 (+7d) | 2027-03-29 → 2027-04-05 (+7d) | 26d → 20d |
| 5 | **Testing** | 2027-04-01 → 2027-04-08 (+7d) | 2027-04-10 → 2027-04-17 (+7d) |  |
| SDR-2-CON-TS-ZA-2520 | Testing of TSE HDPE Pipe 125 mm. | 2027-04-01 → 2027-04-08 (+7d) | 2027-04-10 → 2027-04-17 (+7d) | 24d → 18d |
| 4 | **Backfilling** | 2027-05-05 → 2027-05-22 (+17d) | 2027-05-31 → 2027-06-10 (+10d) |  |
| SDR-2-CON-TS-ZA-2540 | Backfilling of TSE HDPE Pipe 125 mm. | 2027-05-05 → 2027-05-22 (+17d) | 2027-05-31 → 2027-06-10 (+10d) | 3d → 8d |

| ID | Task | Start | Finish | Total float |
| --- | --- | --- | --- | --- |
| 3 | **Valve Chambers & Valves** | 2026-10-12 → 2026-10-19 (+7d) | 2027-04-22 → 2027-04-29 (+7d) |  |
| 3 | **Excavation** | 2026-10-12 → 2026-10-19 (+7d) | 2026-11-26 → 2026-12-03 (+7d) |  |
| SDR-2-CON-TS-ZA-3490 | Excavation for Valve Chambers Section 1 | 2026-10-12 → 2026-10-19 (+7d) | 2026-11-03 → 2026-11-10 (+7d) | 58d → 52d |
| SDR-2-CON-TS-ZA-2560 | Excavation for Valve Chambers Section 2 | 2026-11-04 → 2026-11-11 (+7d) | 2026-11-26 → 2026-12-03 (+7d) | 58d → 52d |
| 1 | **bedding Works** | 2027-01-19 → 2027-01-26 (+7d) | 2027-02-11 → 2027-02-18 (+7d) |  |
| SDR-2-CON-TS-ZA-2550 | Sand bedding for Valve Chambers | 2027-01-19 → 2027-01-26 (+7d) | 2027-02-11 → 2027-02-18 (+7d) | 13d → 7d |
| 4 | **Install Chambers & Valves** | 2027-02-13 → 2027-02-20 (+7d) | 2027-03-14 → 2027-03-21 (+7d) |  |
| SDR-2-CON-TS-ZA-2570 | Valve Chambers & Valves Installation | 2027-02-13 → 2027-02-20 (+7d) | 2027-03-14 → 2027-03-21 (+7d) | 13d → 7d |
| 5 | **Testing** | 2027-03-15 → 2027-03-22 (+7d) | 2027-03-31 → 2027-04-07 (+7d) |  |
| SDR-2-CON-TS-ZA-2580 | Testing Chambers & Valves Installation | 2027-03-15 → 2027-03-22 (+7d) | 2027-03-31 → 2027-04-07 (+7d) | 13d → 7d |
| 6 | **Backfilling** | 2027-04-04 → 2027-04-11 (+7d) | 2027-04-22 → 2027-04-29 (+7d) |  |
| SDR-2-CON-TS-ZA-2590 | Backfilling Chambers & Valves Installation | 2027-04-04 → 2027-04-11 (+7d) | 2027-04-22 → 2027-04-29 (+7d) | 13d → 7d |
| PW | **Portable Water** |  | 2027-05-27 → 2027-06-07 (+11d) |  |
| ZA | **ZONE A** |  | 2027-05-27 → 2027-06-07 (+11d) |  |
| 1 | **PORTABLE WATER IN ( PH2-COL-MC10 )** |  | 2027-05-05 → 2027-05-12 (+7d) |  |
| 7 | **Pipes Work** |  | 2027-04-11 → 2027-04-18 (+7d) |  |
| 1 | **Excavation** |  | 2027-01-18 → 2027-01-25 (+7d) |  |
| SDR-2-CON-PW-ZA-3710 | Excavation for PW HDPE Pipes 315 mm Section 1 |  | 2026-12-20 → 2026-12-27 (+7d) | 2d → 0d |
| SDR-2-CON-PW-ZA-1000 | Excavation for PW HDPE Pipes 315 mm Section 2 |  | 2027-01-18 → 2027-01-25 (+7d) | 65d → 59d |
| 8 | **bedding Works** |  | 2027-03-04 → 2027-03-16 (+12d) |  |
| SDR-2-CON-PW-ZA-2200 | Sand bedding for PW HDPE Pipes 315 mm |  | 2027-03-04 → 2027-03-16 (+12d) | 27d → 21d |
| 2 | **Pipes Laying** |  | 2027-03-14 → 2027-03-21 (+7d) |  |
| SDR-2-CON-PW-ZA-1010 | Install PW 315 mm HDPE Pipe |  | 2027-03-14 → 2027-03-21 (+7d) | 23d → 17d |
| 5 | **Testing** | 2027-03-15 → 2027-03-22 (+7d) | 2027-03-22 → 2027-03-29 (+7d) |  |
| SDR-2-CON-PW-ZA-1080 | Testing of PW HDPE Pipe 315 mm. | 2027-03-15 → 2027-03-22 (+7d) | 2027-03-22 → 2027-03-29 (+7d) | 23d → 17d |
| 9 | **Backfilling** | 2027-03-23 → 2027-03-30 (+7d) | 2027-04-11 → 2027-04-18 (+7d) |  |
| SDR-2-CON-PW-ZA-2210 | Backfilling of PW HDPE Pipe 315 mm. | 2027-03-23 → 2027-03-30 (+7d) | 2027-04-11 → 2027-04-18 (+7d) | 23d → 17d |
| 3 | **Valve Chambers & Valves & Fire Hydrant** | 2026-12-20 → 2026-12-27 (+7d) | 2027-05-05 → 2027-05-12 (+7d) |  |
| 3 | **Excavation** | 2026-12-20 → 2026-12-27 (+7d) | 2027-02-03 → 2027-02-10 (+7d) |  |
| SDR-2-CON-PW-ZA-3720 | Excavation for Valve Chambers Section 1 | 2026-12-20 → 2026-12-27 (+7d) | 2027-01-11 → 2027-01-18 (+7d) | 14d → 26d |
| SDR-2-CON-PW-ZA-1040 | Excavation for Valve Chambers Section 2 | 2027-01-12 → 2027-01-19 (+7d) | 2027-02-03 → 2027-02-10 (+7d) | 14d → 26d |
| 1 | **bedding Works** | 2027-02-04 → 2027-02-11 (+7d) | 2027-02-23 → 2027-03-02 (+7d) |  |
| SDR-2-CON-PW-ZA-1020 | Sand bedding for Valve Chambers | 2027-02-04 → 2027-02-11 (+7d) | 2027-02-23 → 2027-03-02 (+7d) | 14d → 26d |
| 4 | **Install Chambers & Valves & Fire Hydrant** | 2027-02-24 → 2027-03-03 (+7d) | 2027-03-23 → 2027-03-30 (+7d) |  |
| SDR-2-CON-PW-ZA-1050 | Install Chambers & Valves | 2027-02-24 → 2027-03-03 (+7d) | 2027-03-23 → 2027-03-30 (+7d) | 14d → 26d |
| 2 | **Testing** | 2027-04-07 → 2027-04-14 (+7d) | 2027-04-15 → 2027-04-22 (+7d) |  |
| SDR-2-CON-PW-ZA-1030 | Testing for Chambers & Valves | 2027-04-07 → 2027-04-14 (+7d) | 2027-04-15 → 2027-04-22 (+7d) | 2d → 14d |
| 6 | **Backfilling** | 2027-04-12 → 2027-04-19 (+7d) | 2027-05-05 → 2027-05-12 (+7d) |  |
| SDR-2-CON-PW-ZA-1070 | Backfilling for Chambers & Valves | 2027-04-12 → 2027-04-19 (+7d) | 2027-05-05 → 2027-05-12 (+7d) | 2d → 14d |
| 2 | **PORTABLE WATER IN ( PH2-COL-MC20 )** |  | 2027-04-19 → 2027-04-26 (+7d) |  |
| 7 | **Pipes Work** |  | 2027-04-05 → 2027-04-12 (+7d) |  |
| 8 | **bedding Works** |  | 2027-01-13 → 2027-01-20 (+7d) |  |
| SDR-2-CON-PW-ZA-2340 | Sand bedding for PW HDPE Pipes 315 mm |  | 2027-01-13 → 2027-01-20 (+7d) | 93d → 87d |
| 2 | **Pipes Laying** |  | 2027-01-13 → 2027-01-20 (+7d) |  |
| SDR-2-CON-PW-ZA-2270 | Install PW 315 mm HDPE Pipe |  | 2027-01-13 → 2027-01-20 (+7d) | 93d → 87d |
| 5 | **Testing** |  | 2027-02-04 → 2027-02-11 (+7d) |  |
| SDR-2-CON-PW-ZA-2330 | Testing of PW HDPE Pipe 315 mm. |  | 2027-02-04 → 2027-02-11 (+7d) | 74d → 68d |
| 9 | **Backfilling** |  | 2027-04-05 → 2027-04-12 (+7d) |  |
| SDR-2-CON-PW-ZA-2350 | Backfilling of PW HDPE Pipe 315 mm. |  | 2027-04-05 → 2027-04-12 (+7d) | 28d → 22d |
| 3 | **Valve Chambers & Valves & Fire Hydrant** | 2026-12-21 → 2026-12-28 (+7d) | 2027-04-19 → 2027-04-26 (+7d) |  |
| 3 | **Excavation** | 2026-12-21 → 2026-12-28 (+7d) | 2027-02-07 → 2027-02-14 (+7d) |  |
| SDR-2-CON-PW-ZA-3740 | Excavation for Valve Chambers Section 1 | 2026-12-21 → 2026-12-28 (+7d) | 2027-01-13 → 2027-01-20 (+7d) | 16d → 24d |
| SDR-2-CON-PW-ZA-2300 | Excavation for Valve Chambers Section 2 | 2027-01-14 → 2027-01-21 (+7d) | 2027-02-07 → 2027-02-14 (+7d) | 16d → 24d |
| 1 | **bedding Works** | 2027-02-08 → 2027-02-15 (+7d) | 2027-02-25 → 2027-03-04 (+7d) |  |
| SDR-2-CON-PW-ZA-2280 | Sand bedding for Valve Chambers | 2027-02-08 → 2027-02-15 (+7d) | 2027-02-25 → 2027-03-04 (+7d) | 16d → 24d |
| 4 | **Install Chambers & Valves & Fire Hydrant** | 2027-02-27 → 2027-03-06 (+7d) | 2027-03-20 → 2027-03-27 (+7d) |  |
| SDR-2-CON-PW-ZA-2310 | Install Chambers & Valves | 2027-02-27 → 2027-03-06 (+7d) | 2027-03-20 → 2027-03-27 (+7d) | 16d → 24d |
| 2 | **Testing** | 2027-03-21 → 2027-03-28 (+7d) | 2027-03-28 → 2027-04-04 (+7d) |  |
| SDR-2-CON-PW-ZA-2290 | Testing for Chambers & Valves | 2027-03-21 → 2027-03-28 (+7d) | 2027-03-28 → 2027-04-04 (+7d) | 16d → 24d |
| 6 | **Backfilling** | 2027-03-29 → 2027-04-05 (+7d) | 2027-04-19 → 2027-04-26 (+7d) |  |
| SDR-2-CON-PW-ZA-2320 | Backfilling for Chambers & Valves | 2027-03-29 → 2027-04-05 (+7d) | 2027-04-19 → 2027-04-26 (+7d) | 16d → 24d |
| 11 | **PORTABLE WATER IN ( PH2-A-MCA0 )** | 2026-12-21 → 2026-12-28 (+7d) | 2027-05-06 → 2027-05-13 (+7d) |  |
| 7 | **Pipes Work** | 2026-12-21 → 2026-12-28 (+7d) | 2027-05-05 → 2027-05-12 (+7d) |  |
| 1 | **Excavation** | 2026-12-21 → 2026-12-28 (+7d) | 2027-02-13 → 2027-02-20 (+7d) |  |
| SDR-2-CON-PW-ZA-3750 | Excavation for PW HDPE Pipe 225 mm. Section 1 | 2026-12-21 → 2026-12-28 (+7d) | 2027-01-13 → 2027-01-20 (+7d) | 2d → 0d |
| SDR-2-CON-PW-ZA-1200 | Excavation for PW HDPE Pipe 225 mm. Section 2 | 2027-01-20 → 2027-01-27 (+7d) | 2027-02-13 → 2027-02-20 (+7d) | 3d → 5d |
| 3 | **bedding Works** | 2027-02-14 → 2027-02-21 (+7d) | 2027-03-14 → 2027-03-21 (+7d) |  |
| SDR-2-CON-PW-ZA-2220 | Sand bedding for PW HDPE Pipe 225 mm. | 2027-02-14 → 2027-02-21 (+7d) | 2027-03-14 → 2027-03-21 (+7d) | 3d → 5d |
| 2 | **Pipes Laying** | 2027-03-15 → 2027-03-22 (+7d) | 2027-04-03 → 2027-04-10 (+7d) |  |
| SDR-2-CON-PW-ZA-1210 | Install PW 225 mm HDPE Pipe | 2027-03-15 → 2027-03-22 (+7d) | 2027-04-03 → 2027-04-10 (+7d) | 3d → 5d |

| ID | Task | Start | Finish | Total float |
| --- | --- | --- | --- | --- |
| 5 | **Testing** | 2027-04-08 → 2027-04-15 (+7d) | 2027-04-15 → 2027-04-22 (+7d) |  |
| SDR-2-CON-PW-ZA-1280 | Testing of PW HDPE Pipe 225 mm. | 2027-04-08 → 2027-04-15 (+7d) | 2027-04-15 → 2027-04-22 (+7d) | 2d → 4d |
| 4 | **Backfilling** | 2027-04-17 → 2027-04-24 (+7d) | 2027-05-05 → 2027-05-12 (+7d) |  |
| SDR-2-CON-PW-ZA-2230 | Backfilling of PW HDPE Pipe 225 mm. | 2027-04-17 → 2027-04-24 (+7d) | 2027-05-05 → 2027-05-12 (+7d) | 2d → 4d |
| 3 | **Valve Chambers & Valves & Fire Hydrant** | 2026-12-21 → 2026-12-28 (+7d) | 2027-05-06 → 2027-05-13 (+7d) |  |
| 3 | **Excavation** | 2026-12-21 → 2026-12-28 (+7d) | 2027-02-04 → 2027-02-11 (+7d) |  |
| SDR-2-CON-PW-ZA-3760 | Excavation for Valve Chambers Section 1 | 2026-12-21 → 2026-12-28 (+7d) | 2027-01-12 → 2027-01-19 (+7d) | 8d → 17d |
| SDR-2-CON-PW-ZA-2680 | Excavation for Valve Chambers Section 2 | 2027-01-13 → 2027-01-20 (+7d) | 2027-02-04 → 2027-02-11 (+7d) | 8d → 17d |
| 1 | **bedding Works** | 2027-02-06 → 2027-02-13 (+7d) | 2027-03-01 → 2027-03-08 (+7d) |  |
| SDR-2-CON-PW-ZA-2660 | Sand bedding for Valve Chambers | 2027-02-06 → 2027-02-13 (+7d) | 2027-03-01 → 2027-03-08 (+7d) | 8d → 17d |
| 4 | **Install Chambers & Valves & Fire Hydrant** | 2027-03-02 → 2027-03-14 (+12d) | 2027-03-29 → 2027-04-05 (+7d) |  |
| SDR-2-CON-PW-ZA-2690 | Install Chambers & Valves | 2027-03-02 → 2027-03-14 (+12d) | 2027-03-29 → 2027-04-05 (+7d) | 8d → 17d |
| 2 | **Testing** | 2027-04-11 → 2027-04-18 (+7d) | 2027-04-19 → 2027-04-26 (+7d) |  |
| SDR-2-CON-PW-ZA-2670 | Testing for Chambers & Valves | 2027-04-11 → 2027-04-18 (+7d) | 2027-04-19 → 2027-04-26 (+7d) | 1d → 10d |
| 6 | **Backfilling** | 2027-04-20 → 2027-04-27 (+7d) | 2027-05-06 → 2027-05-13 (+7d) |  |
| SDR-2-CON-PW-ZA-2700 | Backfilling for Chambers & Valves | 2027-04-20 → 2027-04-27 (+7d) | 2027-05-06 → 2027-05-13 (+7d) | 1d → 13d |
| 12 | **PORTABLE WATER IN ( PH2-A-MCB0 )** | 2026-12-24 → 2026-12-31 (+7d) | 2027-05-13 → 2027-06-07 (+25d) |  |
| 7 | **Pipes Work** | 2026-12-24 → 2026-12-31 (+7d) | 2027-05-13 → 2027-06-07 (+25d) |  |
| 1 | **Excavation** | 2026-12-24 → 2026-12-31 (+7d) | 2027-02-10 → 2027-02-17 (+7d) |  |
| SDR-2-CON-PW-ZA-3770 | Excavation for PW HDPE Pipe 225 mm. Section 1 | 2026-12-24 → 2026-12-31 (+7d) | 2027-01-17 → 2027-01-24 (+7d) | 2d → 0d |
| SDR-2-CON-PW-ZA-2710 | Excavation for PW HDPE Pipe 225 mm. Section 2 | 2027-01-18 → 2027-01-25 (+7d) | 2027-02-10 → 2027-02-17 (+7d) | 58d → 52d |
| 3 | **bedding Works** | 2027-03-06 → 2027-03-17 (+11d) | 2027-04-03 → 2027-04-10 (+7d) |  |
| SDR-2-CON-PW-ZA-2740 | Sand bedding for PW HDPE Pipe 225 mm. | 2027-03-06 → 2027-03-17 (+11d) | 2027-04-03 → 2027-04-10 (+7d) | 40d → 34d |
| 2 | **Pipes Laying** | 2027-04-04 → 2027-04-11 (+7d) | 2027-04-26 → 2027-05-03 (+7d) |  |
| SDR-2-CON-PW-ZA-2720 | Install PW 225 mm HDPE Pipe | 2027-04-04 → 2027-04-11 (+7d) | 2027-04-26 → 2027-05-03 (+7d) | 40d → 34d |
| 5 | **Testing** | 2027-04-27 → 2027-05-22 (+25d) | 2027-05-05 → 2027-05-30 (+25d) |  |
| SDR-2-CON-PW-ZA-2730 | Testing of PW HDPE Pipe 225 mm. | 2027-04-27 → 2027-05-22 (+25d) | 2027-05-05 → 2027-05-30 (+25d) | 40d → 24d |
| 4 | **Backfilling** | 2027-04-29 → 2027-05-24 (+25d) | 2027-05-13 → 2027-06-07 (+25d) |  |
| SDR-2-CON-PW-ZA-2750 | Backfilling of PW HDPE Pipe 225 mm. | 2027-04-29 → 2027-05-24 (+25d) | 2027-05-13 → 2027-06-07 (+25d) | 40d → 24d |
| 3 | **Valve Chambers & Valves & Fire Hydrant** | 2026-12-24 → 2026-12-31 (+7d) | 2027-04-26 → 2027-05-03 (+7d) |  |
| 3 | **Excavation** | 2026-12-24 → 2026-12-31 (+7d) | 2027-02-10 → 2027-02-17 (+7d) |  |
| SDR-2-CON-PW-ZA-3780 | Excavation for Valve Chambers Section 1 | 2026-12-24 → 2026-12-31 (+7d) | 2027-01-17 → 2027-01-24 (+7d) | 10d → 4d |
| SDR-2-CON-PW-ZA-2780 | Excavation for Valve Chambers Section 2 | 2027-01-18 → 2027-01-25 (+7d) | 2027-02-10 → 2027-02-17 (+7d) | 10d → 4d |
| 1 | **bedding Works** | 2027-02-11 → 2027-02-18 (+7d) | 2027-03-07 → 2027-03-18 (+11d) |  |
| SDR-2-CON-PW-ZA-2760 | Sand bedding for Valve Chambers | 2027-02-11 → 2027-02-18 (+7d) | 2027-03-07 → 2027-03-18 (+11d) | 10d → 4d |
| 4 | **Install Chambers & Valves & Fire Hydrant** | 2027-03-08 → 2027-03-20 (+12d) | 2027-04-03 → 2027-04-10 (+7d) |  |
| SDR-2-CON-PW-ZA-2790 | Install Chambers & Valves | 2027-03-08 → 2027-03-20 (+12d) | 2027-04-03 → 2027-04-10 (+7d) | 10d → 4d |
| 2 | **Testing** | 2027-04-04 → 2027-04-11 (+7d) | 2027-04-12 → 2027-04-19 (+7d) |  |
| SDR-2-CON-PW-ZA-2770 | Testing for Chambers & Valves | 2027-04-04 → 2027-04-11 (+7d) | 2027-04-12 → 2027-04-19 (+7d) | 10d → 4d |
| 6 | **Backfilling** | 2027-04-13 → 2027-04-20 (+7d) | 2027-04-26 → 2027-05-03 (+7d) |  |
| SDR-2-CON-PW-ZA-2800 | Backfilling for Chambers & Valves | 2027-04-13 → 2027-04-20 (+7d) | 2027-04-26 → 2027-05-03 (+7d) | 10d → 4d |
| 3 | **PORTABLE WATER IN ( PH2-A-MCC0 )** |  | 2027-05-27 → 2027-06-03 (+7d) |  |
| 7 | **Pipes Work** |  | 2027-04-27 → 2027-05-04 (+7d) |  |
| 1 | **Excavation** |  | 2027-02-10 → 2027-02-17 (+7d) |  |
| SDR-2-CON-PW-ZA-1400 | Excavation for PW HDPE Pipe 160 mm. Section 2 |  | 2027-02-10 → 2027-02-17 (+7d) | 9d → 3d |
| 3 | **bedding Works** | 2027-02-11 → 2027-02-18 (+7d) | 2027-03-07 → 2027-03-18 (+11d) |  |
| SDR-2-CON-PW-ZA-2240 | Sand bedding for PW HDPE Pipe 160 mm. | 2027-02-11 → 2027-02-18 (+7d) | 2027-03-07 → 2027-03-18 (+11d) | 9d → 3d |
| 2 | **Pipes Laying** | 2027-03-08 → 2027-03-20 (+12d) | 2027-04-04 → 2027-04-11 (+7d) |  |
| SDR-2-CON-PW-ZA-1410 | Install PW 160 mm HDPE Pipe | 2027-03-08 → 2027-03-20 (+12d) | 2027-04-04 → 2027-04-11 (+7d) | 9d → 3d |
| 5 | **Testing** | 2027-04-05 → 2027-04-12 (+7d) | 2027-04-13 → 2027-04-20 (+7d) |  |
| SDR-2-CON-PW-ZA-1480 | Testing of PW HDPE Pipe 160 mm. | 2027-04-05 → 2027-04-12 (+7d) | 2027-04-13 → 2027-04-20 (+7d) | 9d → 3d |
| 4 | **Backfilling** | 2027-04-14 → 2027-04-21 (+7d) | 2027-04-27 → 2027-05-04 (+7d) |  |
| SDR-2-CON-PW-ZA-2250 | Backfilling of PW HDPE Pipe 160 mm. | 2027-04-14 → 2027-04-21 (+7d) | 2027-04-27 → 2027-05-04 (+7d) | 9d → 3d |
| 3 | **Valve Chambers & Valves & Fire Hydrant** | 2027-01-18 → 2027-01-25 (+7d) | 2027-05-27 → 2027-06-03 (+7d) |  |
| 3 | **Excavation** | 2027-01-18 → 2027-01-25 (+7d) | 2027-03-08 → 2027-03-20 (+12d) |  |
| SDR-2-CON-PW-ZA-3800 | Excavation for Valve Chambers Section 1 | 2027-01-18 → 2027-01-25 (+7d) | 2027-02-10 → 2027-02-17 (+7d) | 2d → 0d |
| SDR-2-CON-PW-ZA-3230 | Excavation for Valve Chambers Section 2 | 2027-02-11 → 2027-02-18 (+7d) | 2027-03-08 → 2027-03-20 (+12d) | 2d → 0d |
| 1 | **bedding Works** | 2027-03-14 → 2027-03-21 (+7d) | 2027-04-05 → 2027-04-12 (+7d) |  |
| SDR-2-CON-PW-ZA-3210 | Sand bedding for Valve Chambers | 2027-03-14 → 2027-03-21 (+7d) | 2027-04-05 → 2027-04-12 (+7d) | 2d → 0d |
| 4 | **Install Chambers & Valves & Fire Hydrant** | 2027-04-06 → 2027-04-13 (+7d) | 2027-04-28 → 2027-05-05 (+7d) |  |
| SDR-2-CON-PW-ZA-3240 | Install Chambers & Valves | 2027-04-06 → 2027-04-13 (+7d) | 2027-04-28 → 2027-05-05 (+7d) | 2d → 0d |
| 2 | **Testing** | 2027-04-29 → 2027-05-06 (+7d) | 2027-05-05 → 2027-05-12 (+7d) |  |
| SDR-2-CON-PW-ZA-3220 | Testing for Chambers & Valves | 2027-04-29 → 2027-05-06 (+7d) | 2027-05-05 → 2027-05-12 (+7d) | 2d → 0d |
| 6 | **Backfilling** | 2027-05-06 → 2027-05-13 (+7d) | 2027-05-27 → 2027-06-03 (+7d) |  |
| SDR-2-CON-PW-ZA-3250 | Backfilling for Chambers & Valves | 2027-05-06 → 2027-05-13 (+7d) | 2027-05-27 → 2027-06-03 (+7d) | 6d → 0d |
| 4 | **PORTABLE WATER IN ( PH2-A-MCD0 )** |  | 2027-05-23 → 2027-05-30 (+7d) |  |
| 7 | **Pipes Work** |  | 2027-05-04 → 2027-05-11 (+7d) |  |
| 1 | **Excavation** |  | 2027-02-23 → 2027-03-02 (+7d) |  |
| SDR-2-CON-PW-ZA-3260 | Excavation for PW HDPE Pipe 160 mm. Section 2 |  | 2027-02-23 → 2027-03-02 (+7d) | 3d → 7d |
| 3 | **bedding Works** | 2027-02-24 → 2027-03-03 (+7d) | 2027-03-21 → 2027-03-28 (+7d) |  |

| ID | Task | Start | Finish | Total float |
| --- | --- | --- | --- | --- |
| SDR-2-CON-PW-ZA-3290 | Sand bedding for PW HDPE Pipe 160 mm. | 2027-02-24 → 2027-03-03 (+7d) | 2027-03-21 → 2027-03-28 (+7d) | 3d → 7d |
| 2 | **Pipes Laying** | 2027-03-22 → 2027-03-29 (+7d) | 2027-04-13 → 2027-04-20 (+7d) |  |
| SDR-2-CON-PW-ZA-3270 | Install PW 160 mm HDPE Pipe | 2027-03-22 → 2027-03-29 (+7d) | 2027-04-13 → 2027-04-20 (+7d) | 3d → 7d |
| 5 | **Testing** | 2027-04-14 → 2027-04-21 (+7d) | 2027-04-22 → 2027-04-29 (+7d) |  |
| SDR-2-CON-PW-ZA-3280 | Testing of PW HDPE Pipe 160 mm. | 2027-04-14 → 2027-04-21 (+7d) | 2027-04-22 → 2027-04-29 (+7d) | 3d → 7d |
| 4 | **Backfilling** | 2027-04-24 → 2027-05-01 (+7d) | 2027-05-04 → 2027-05-11 (+7d) |  |
| SDR-2-CON-PW-ZA-3300 | Backfilling of PW HDPE Pipe 160 mm. | 2027-04-24 → 2027-05-01 (+7d) | 2027-05-04 → 2027-05-11 (+7d) | 3d → 42d |
| 3 | **Valve Chambers & Valves & Fire Hydrant** | 2027-01-18 → 2027-01-25 (+7d) | 2027-05-23 → 2027-05-30 (+7d) |  |
| 3 | **Excavation** | 2027-01-18 → 2027-01-25 (+7d) | 2027-03-08 → 2027-03-20 (+12d) |  |
| SDR-2-CON-PW-ZA-3820 | Excavation for Valve Chambers Section 1 | 2027-01-18 → 2027-01-25 (+7d) | 2027-02-10 → 2027-02-17 (+7d) | 2d → 1d |
| SDR-2-CON-PW-ZA-3330 | Excavation for Valve Chambers Section 2 | 2027-02-11 → 2027-02-18 (+7d) | 2027-03-08 → 2027-03-20 (+12d) | 2d → 1d |
| 1 | **bedding Works** | 2027-03-14 → 2027-03-21 (+7d) | 2027-04-03 → 2027-04-10 (+7d) |  |
| SDR-2-CON-PW-ZA-3310 | Sand bedding for Valve Chambers | 2027-03-14 → 2027-03-21 (+7d) | 2027-04-03 → 2027-04-10 (+7d) | 2d → 1d |
| 4 | **Install Chambers & Valves & Fire Hydrant** | 2027-04-04 → 2027-04-11 (+7d) | 2027-04-26 → 2027-05-03 (+7d) |  |
| SDR-2-CON-PW-ZA-3340 | Install Chambers & Valves | 2027-04-04 → 2027-04-11 (+7d) | 2027-04-26 → 2027-05-03 (+7d) | 2d → 1d |
| 2 | **Testing** | 2027-04-27 → 2027-05-04 (+7d) | 2027-05-05 → 2027-05-12 (+7d) |  |
| SDR-2-CON-PW-ZA-3320 | Testing for Chambers & Valves | 2027-04-27 → 2027-05-04 (+7d) | 2027-05-05 → 2027-05-12 (+7d) | 2d → 1d |
| 6 | **Backfilling** | 2027-05-06 → 2027-05-13 (+7d) | 2027-05-23 → 2027-05-30 (+7d) |  |
| SDR-2-CON-PW-ZA-3350 | Backfilling for Chambers & Valves | 2027-05-06 → 2027-05-13 (+7d) | 2027-05-23 → 2027-05-30 (+7d) | 2d → 1d |
| 5 | **PORTABLE WATER IN ( PH2-A-MCE0 )** |  | 2027-05-26 → 2027-06-02 (+7d) |  |
| 7 | **Pipes Work** |  | 2027-01-17 → 2027-01-24 (+7d) |  |
| 3 | **bedding Works** |  | 2026-12-03 → 2026-12-10 (+7d) |  |
| SDR-2-CON-PW-ZA-3390 | Sand bedding for PW HDPE Pipe 160 mm. |  | 2026-12-03 → 2026-12-10 (+7d) | 90d → 84d |
| 2 | **Pipes Laying** |  | 2026-12-21 → 2026-12-28 (+7d) |  |
| SDR-2-CON-PW-ZA-3370 | Install PW 160 mm HDPE Pipe |  | 2026-12-21 → 2026-12-28 (+7d) | 90d → 84d |
| 5 | **Testing** | 2026-12-22 → 2026-12-29 (+7d) | 2026-12-30 → 2027-01-06 (+7d) |  |
| SDR-2-CON-PW-ZA-3380 | Testing of PW HDPE Pipe 160 mm. | 2026-12-22 → 2026-12-29 (+7d) | 2026-12-30 → 2027-01-06 (+7d) | 90d → 84d |
| 4 | **Backfilling** | 2026-12-31 → 2027-01-07 (+7d) | 2027-01-17 → 2027-01-24 (+7d) |  |
| SDR-2-CON-PW-ZA-3400 | Backfilling of PW HDPE Pipe 160 mm. | 2026-12-31 → 2027-01-07 (+7d) | 2027-01-17 → 2027-01-24 (+7d) | 90d → 84d |
| 3 | **Valve Chambers & Valves & Fire Hydrant** | 2026-10-12 → 2026-10-19 (+7d) | 2027-05-26 → 2027-06-02 (+7d) |  |
| 3 | **Excavation** | 2026-10-12 → 2026-10-19 (+7d) | 2027-03-14 → 2027-03-21 (+7d) |  |
| SDR-2-CON-PW-ZA-3840 | Excavation for Valve Chambers Section 1 | 2026-10-12 → 2026-10-19 (+7d) | 2026-11-03 → 2026-11-10 (+7d) | 94d → 88d |
| SDR-2-CON-PW-ZA-3430 | Excavation for Valve Chambers Section 2 | 2027-02-13 → 2027-02-20 (+7d) | 2027-03-14 → 2027-03-21 (+7d) | 7.81d → 1.81d |
| 1 | **bedding Works** | 2027-03-14 → 2027-03-21 (+7d) | 2027-04-04 → 2027-04-11 (+7d) |  |
| SDR-2-CON-PW-ZA-3410 | Sand bedding for Valve Chambers | 2027-03-14 → 2027-03-21 (+7d) | 2027-04-04 → 2027-04-11 (+7d) | 7.81d → 1.81d |
| 4 | **Install Chambers & Valves & Fire Hydrant** | 2027-04-04 → 2027-04-11 (+7d) | 2027-04-24 → 2027-05-01 (+7d) |  |
| SDR-2-CON-PW-ZA-3440 | Install Chambers & Valves | 2027-04-04 → 2027-04-11 (+7d) | 2027-04-24 → 2027-05-01 (+7d) | 7.81d → 1.81d |
| 2 | **Testing** | 2027-04-24 → 2027-05-01 (+7d) | 2027-05-03 → 2027-05-10 (+7d) |  |
| SDR-2-CON-PW-ZA-3420 | Testing for Chambers & Valves | 2027-04-24 → 2027-05-01 (+7d) | 2027-05-03 → 2027-05-10 (+7d) | 7.81d → 1.81d |
| 6 | **Backfilling** | 2027-05-03 → 2027-05-10 (+7d) | 2027-05-26 → 2027-06-02 (+7d) |  |
| SDR-2-CON-PW-ZA-3450 | Backfilling for Chambers & Valves | 2027-05-03 → 2027-05-10 (+7d) | 2027-05-26 → 2027-06-02 (+7d) | 7.81d → 1.81d |
| 6 | **PORTABLE WATER IN ( PH2-A-MCF0 )** |  | 2027-05-04 → 2027-05-11 (+7d) |  |
| 7 | **Pipes Work** |  | 2027-04-10 → 2027-04-17 (+7d) |  |
| 1 | **Excavation** |  | 2027-01-28 → 2027-02-04 (+7d) |  |
| SDR-2-CON-PW-ZA-3460 | Excavation for PW HDPE Pipe 160 mm. Section 2 |  | 2027-01-28 → 2027-02-04 (+7d) | 24d → 18d |
| 3 | **bedding Works** |  | 2027-02-18 → 2027-02-27 (+9d) |  |
| SDR-2-CON-PW-ZA-3490 | Sand bedding for PW HDPE Pipe 160 mm. |  | 2027-02-18 → 2027-02-27 (+9d) | 24d → 18d |
| 2 | **Pipes Laying** |  | 2027-03-20 → 2027-03-27 (+7d) |  |
| SDR-2-CON-PW-ZA-3470 | Install PW 160 mm HDPE Pipe |  | 2027-03-20 → 2027-03-27 (+7d) | 24d → 18d |
| 5 | **Testing** | 2027-03-21 → 2027-03-28 (+7d) | 2027-03-27 → 2027-04-03 (+7d) |  |
| SDR-2-CON-PW-ZA-3480 | Testing of PW HDPE Pipe 160 mm. | 2027-03-21 → 2027-03-28 (+7d) | 2027-03-27 → 2027-04-03 (+7d) | 24d → 18d |
| 4 | **Backfilling** | 2027-03-28 → 2027-04-04 (+7d) | 2027-04-10 → 2027-04-17 (+7d) |  |
| SDR-2-CON-PW-ZA-3500 | Backfilling of PW HDPE Pipe 160 mm. | 2027-03-28 → 2027-04-04 (+7d) | 2027-04-10 → 2027-04-17 (+7d) | 24d → 18d |
| 3 | **Valve Chambers & Valves & Fire Hydrant** | 2027-01-05 → 2027-01-12 (+7d) | 2027-05-04 → 2027-05-11 (+7d) |  |
| 3 | **Excavation** | 2027-01-05 → 2027-01-12 (+7d) | 2027-02-23 → 2027-03-02 (+7d) |  |
| SDR-2-CON-PW-ZA-3860 | Excavation for Valve Chambers Section 1 | 2027-01-05 → 2027-01-12 (+7d) | 2027-01-28 → 2027-02-04 (+7d) | 3d → 15d |
| SDR-2-CON-PW-ZA-3530 | Excavation for Valve Chambers Section 2 | 2027-01-30 → 2027-02-06 (+7d) | 2027-02-23 → 2027-03-02 (+7d) | 3d → 15d |
| 1 | **bedding Works** | 2027-02-24 → 2027-03-03 (+7d) | 2027-03-21 → 2027-03-28 (+7d) |  |
| SDR-2-CON-PW-ZA-3510 | Sand bedding for Valve Chambers | 2027-02-24 → 2027-03-03 (+7d) | 2027-03-21 → 2027-03-28 (+7d) | 3d → 15d |
| 4 | **Install Chambers & Valves & Fire Hydrant** | 2027-03-22 → 2027-03-29 (+7d) | 2027-04-13 → 2027-04-20 (+7d) |  |
| SDR-2-CON-PW-ZA-3540 | Install Chambers & Valves | 2027-03-22 → 2027-03-29 (+7d) | 2027-04-13 → 2027-04-20 (+7d) | 3d → 15d |
| 2 | **Testing** | 2027-04-14 → 2027-04-21 (+7d) | 2027-04-21 → 2027-04-28 (+7d) |  |
| SDR-2-CON-PW-ZA-3520 | Testing for Chambers & Valves | 2027-04-14 → 2027-04-21 (+7d) | 2027-04-21 → 2027-04-28 (+7d) | 3d → 15d |
| 6 | **Backfilling** | 2027-04-22 → 2027-04-29 (+7d) | 2027-05-04 → 2027-05-11 (+7d) |  |
| SDR-2-CON-PW-ZA-3550 | Backfilling for Chambers & Valves | 2027-04-22 → 2027-04-29 (+7d) | 2027-05-04 → 2027-05-11 (+7d) | 3d → 15d |
| 7 | **PORTABLE WATER IN ( PH2-A-MCG0 )** | 2027-01-05 → 2027-01-12 (+7d) | 2027-05-22 → 2027-05-29 (+7d) |  |
| 7 | **Pipes Work** | 2027-01-05 → 2027-01-12 (+7d) | 2027-05-03 → 2027-05-10 (+7d) |  |
| 1 | **Excavation** | 2027-01-05 → 2027-01-12 (+7d) | 2027-02-23 → 2027-03-02 (+7d) |  |
| SDR-2-CON-PW-ZA-3870 | Excavation for PW HDPE Pipe 160 mm. Section 1 | 2027-01-05 → 2027-01-12 (+7d) | 2027-01-28 → 2027-02-04 (+7d) | 4d → 3d |
| SDR-2-CON-PW-ZA-3560 | Excavation for PW HDPE Pipe 160 mm. Section 2 | 2027-01-30 → 2027-02-06 (+7d) | 2027-02-23 → 2027-03-02 (+7d) | 4d → 16d |

| ID | Task | Start | Finish | Total float |
| --- | --- | --- | --- | --- |
| 3 | **bedding Works** | 2027-02-24 → 2027-03-03 (+7d) | 2027-03-23 → 2027-03-30 (+7d) |  |
| SDR-2-CON-PW-ZA-3590 | Sand bedding for PW HDPE Pipe 160 mm. | 2027-02-24 → 2027-03-03 (+7d) | 2027-03-23 → 2027-03-30 (+7d) | 4d → 16d |
| 2 | **Pipes Laying** | 2027-03-24 → 2027-03-31 (+7d) | 2027-04-08 → 2027-04-15 (+7d) |  |
| SDR-2-CON-PW-ZA-3570 | Install PW 160 mm HDPE Pipe | 2027-03-24 → 2027-03-31 (+7d) | 2027-04-08 → 2027-04-15 (+7d) | 4d → 16d |
| 5 | **Testing** | 2027-04-10 → 2027-04-17 (+7d) | 2027-04-18 → 2027-04-25 (+7d) |  |
| SDR-2-CON-PW-ZA-3580 | Testing of PW HDPE Pipe 160 mm. | 2027-04-10 → 2027-04-17 (+7d) | 2027-04-18 → 2027-04-25 (+7d) | 4d → 16d |
| 4 | **Backfilling** | 2027-04-19 → 2027-04-26 (+7d) | 2027-05-03 → 2027-05-10 (+7d) |  |
| SDR-2-CON-PW-ZA-3600 | Backfilling of PW HDPE Pipe 160 mm. | 2027-04-19 → 2027-04-26 (+7d) | 2027-05-03 → 2027-05-10 (+7d) | 4d → 16d |
| 3 | **Valve Chambers & Valves & Fire Hydrant** | 2027-01-18 → 2027-01-25 (+7d) | 2027-05-22 → 2027-05-29 (+7d) |  |
| 3 | **Excavation** | 2027-01-18 → 2027-01-25 (+7d) | 2027-03-08 → 2027-03-20 (+12d) |  |
| SDR-2-CON-PW-ZA-3880 | Excavation for Valve Chambers Section 1 | 2027-01-18 → 2027-01-25 (+7d) | 2027-02-10 → 2027-02-17 (+7d) | 11d → 5d |
| SDR-2-CON-PW-ZA-3630 | Excavation for Valve Chambers Section 2 | 2027-02-11 → 2027-02-18 (+7d) | 2027-03-08 → 2027-03-20 (+12d) | 11d → 5d |
| 1 | **bedding Works** | 2027-03-14 → 2027-03-21 (+7d) | 2027-04-05 → 2027-04-12 (+7d) |  |
| SDR-2-CON-PW-ZA-3610 | Sand bedding for Valve Chambers | 2027-03-14 → 2027-03-21 (+7d) | 2027-04-05 → 2027-04-12 (+7d) | 11d → 5d |
| 4 | **Install Chambers & Valves & Fire Hydrant** | 2027-04-06 → 2027-04-13 (+7d) | 2027-04-25 → 2027-05-02 (+7d) |  |
| SDR-2-CON-PW-ZA-3640 | Install Chambers & Valves | 2027-04-06 → 2027-04-13 (+7d) | 2027-04-25 → 2027-05-02 (+7d) | 11d → 5d |
| 2 | **Testing** | 2027-04-26 → 2027-05-03 (+7d) | 2027-05-04 → 2027-05-11 (+7d) |  |
| SDR-2-CON-PW-ZA-3620 | Testing for Chambers & Valves | 2027-04-26 → 2027-05-03 (+7d) | 2027-05-04 → 2027-05-11 (+7d) | 11d → 5d |
| 6 | **Backfilling** | 2027-05-05 → 2027-05-12 (+7d) | 2027-05-22 → 2027-05-29 (+7d) |  |
| SDR-2-CON-PW-ZA-3650 | Backfilling for Chambers & Valves | 2027-05-05 → 2027-05-12 (+7d) | 2027-05-22 → 2027-05-29 (+7d) | 11d → 5d |
| 8 | **PORTABLE WATER IN ( PH2-A-MCH0 )** | 2027-01-09 → 2027-01-16 (+7d) | 2027-05-05 → 2027-05-12 (+7d) |  |
| 7 | **Pipes Work** | 2027-01-09 → 2027-01-16 (+7d) | 2027-05-05 → 2027-05-12 (+7d) |  |
| 1 | **Excavation** | 2027-01-09 → 2027-01-16 (+7d) | 2027-02-27 → 2027-03-06 (+7d) |  |
| SDR-2-CON-PW-ZA-3890 | Excavation for PW HDPE Pipe 225 mm. Section 1 | 2027-01-09 → 2027-01-16 (+7d) | 2027-02-01 → 2027-02-08 (+7d) | 9d → 3d |
| SDR-2-CON-PW-ZA-2810 | Excavation for PW HDPE Pipe 225 mm. Section 2 | 2027-02-02 → 2027-02-09 (+7d) | 2027-02-27 → 2027-03-06 (+7d) | 14d → 8d |
| 3 | **bedding Works** | 2027-02-28 → 2027-03-07 (+7d) | 2027-03-27 → 2027-04-03 (+7d) |  |
| SDR-2-CON-PW-ZA-2840 | Sand bedding for PW HDPE Pipe 225 mm. | 2027-02-28 → 2027-03-07 (+7d) | 2027-03-27 → 2027-04-03 (+7d) | 14d → 8d |
| 2 | **Pipes Laying** | 2027-03-28 → 2027-04-04 (+7d) | 2027-04-13 → 2027-04-20 (+7d) |  |
| SDR-2-CON-PW-ZA-2820 | Install PW 225 mm HDPE Pipe | 2027-03-28 → 2027-04-04 (+7d) | 2027-04-13 → 2027-04-20 (+7d) | 14d → 8d |
| 5 | **Testing** | 2027-04-14 → 2027-04-21 (+7d) | 2027-04-21 → 2027-04-28 (+7d) |  |
| SDR-2-CON-PW-ZA-2830 | Testing of PW HDPE Pipe 225 mm. | 2027-04-14 → 2027-04-21 (+7d) | 2027-04-21 → 2027-04-28 (+7d) | 14d → 8d |
| 4 | **Backfilling** | 2027-04-22 → 2027-04-29 (+7d) | 2027-05-05 → 2027-05-12 (+7d) |  |
| SDR-2-CON-PW-ZA-2850 | Backfilling of PW HDPE Pipe 225 mm. | 2027-04-22 → 2027-04-29 (+7d) | 2027-05-05 → 2027-05-12 (+7d) | 20d → 14d |
| 3 | **Valve Chambers & Valves & Fire Hydrant** | 2027-01-09 → 2027-01-16 (+7d) | 2027-05-05 → 2027-05-12 (+7d) |  |
| 3 | **Excavation** | 2027-01-09 → 2027-01-16 (+7d) | 2027-02-27 → 2027-03-06 (+7d) |  |
| SDR-2-CON-PW-ZA-3900 | Excavation for Valve Chambers Section 1 | 2027-01-09 → 2027-01-16 (+7d) | 2027-02-01 → 2027-02-08 (+7d) | 14d → 8d |
| SDR-2-CON-PW-ZA-2880 | Excavation for Valve Chambers Section 2 | 2027-02-02 → 2027-02-09 (+7d) | 2027-02-27 → 2027-03-06 (+7d) | 14d → 8d |
| 1 | **bedding Works** | 2027-02-28 → 2027-03-07 (+7d) | 2027-03-27 → 2027-04-03 (+7d) |  |
| SDR-2-CON-PW-ZA-2860 | Sand bedding for Valve Chambers | 2027-02-28 → 2027-03-07 (+7d) | 2027-03-27 → 2027-04-03 (+7d) | 14d → 8d |
| 4 | **Install Chambers & Valves & Fire Hydrant** | 2027-03-28 → 2027-04-04 (+7d) | 2027-04-13 → 2027-04-20 (+7d) |  |
| SDR-2-CON-PW-ZA-2890 | Install Chambers & Valves | 2027-03-28 → 2027-04-04 (+7d) | 2027-04-13 → 2027-04-20 (+7d) | 14d → 8d |
| 2 | **Testing** | 2027-04-14 → 2027-04-21 (+7d) | 2027-04-21 → 2027-04-28 (+7d) |  |
| SDR-2-CON-PW-ZA-2870 | Testing for Chambers & Valves | 2027-04-14 → 2027-04-21 (+7d) | 2027-04-21 → 2027-04-28 (+7d) | 14d → 8d |
| 6 | **Backfilling** | 2027-04-22 → 2027-04-29 (+7d) | 2027-05-05 → 2027-05-12 (+7d) |  |
| SDR-2-CON-PW-ZA-2900 | Backfilling for Chambers & Valves | 2027-04-22 → 2027-04-29 (+7d) | 2027-05-05 → 2027-05-12 (+7d) | 20d → 14d |
| 9 | **PORTABLE WATER IN ( PH2-ART-MC00 )** |  | 2027-05-06 → 2027-05-13 (+7d) |  |
| 7 | **Pipes Work** |  | 2027-04-12 → 2027-04-19 (+7d) |  |
| 1 | **Excavation** |  | 2027-02-04 → 2027-02-11 (+7d) |  |
| SDR-2-CON-PW-ZA-2360 | Excavation for PW HDPE Pipes 315 mm Section 2 |  | 2027-02-04 → 2027-02-11 (+7d) | 22d → 16d |
| 8 | **bedding Works** | 2027-02-06 → 2027-02-13 (+7d) | 2027-03-01 → 2027-03-08 (+7d) |  |
| SDR-2-CON-PW-ZA-2440 | Sand bedding for PW HDPE Pipes 315 mm | 2027-02-06 → 2027-02-13 (+7d) | 2027-03-01 → 2027-03-08 (+7d) | 22d → 16d |
| 2 | **Pipes Laying** | 2027-03-02 → 2027-03-14 (+12d) | 2027-03-25 → 2027-04-01 (+7d) |  |
| SDR-2-CON-PW-ZA-2370 | Install PW 315 mm HDPE Pipe | 2027-03-02 → 2027-03-14 (+12d) | 2027-03-25 → 2027-04-01 (+7d) | 22d → 16d |
| 5 | **Testing** | 2027-03-27 → 2027-04-03 (+7d) | 2027-04-03 → 2027-04-10 (+7d) |  |
| SDR-2-CON-PW-ZA-2430 | Testing of PW HDPE Pipe 315 mm. | 2027-03-27 → 2027-04-03 (+7d) | 2027-04-03 → 2027-04-10 (+7d) | 22d → 16d |
| 9 | **Backfilling** | 2027-04-04 → 2027-04-11 (+7d) | 2027-04-12 → 2027-04-19 (+7d) |  |
| SDR-2-CON-PW-ZA-2450 | Backfilling of PW HDPE Pipe 315 mm. | 2027-04-04 → 2027-04-11 (+7d) | 2027-04-12 → 2027-04-19 (+7d) | 22d → 16d |
| 3 | **Valve Chambers & Valves & Fire Hydrant** | 2027-01-12 → 2027-01-19 (+7d) | 2027-05-06 → 2027-05-13 (+7d) |  |
| 3 | **Excavation** | 2027-01-12 → 2027-01-19 (+7d) | 2027-03-02 → 2027-03-14 (+12d) |  |
| SDR-2-CON-PW-ZA-3920 | Excavation for Valve Chambers Section 1 | 2027-01-12 → 2027-01-19 (+7d) | 2027-02-04 → 2027-02-11 (+7d) | 9d → 3d |
| SDR-2-CON-PW-ZA-2400 | Excavation for Valve Chambers Section 2 | 2027-02-06 → 2027-02-13 (+7d) | 2027-03-02 → 2027-03-14 (+12d) | 9d → 3d |
| 1 | **bedding Works** | 2027-03-03 → 2027-03-15 (+12d) | 2027-03-30 → 2027-04-06 (+7d) |  |
| SDR-2-CON-PW-ZA-2380 | Sand bedding for Valve Chambers | 2027-03-03 → 2027-03-15 (+12d) | 2027-03-30 → 2027-04-06 (+7d) | 9d → 3d |
| 4 | **Install Chambers & Valves & Fire Hydrant** | 2027-03-31 → 2027-04-07 (+7d) | 2027-04-18 → 2027-04-25 (+7d) |  |
| SDR-2-CON-PW-ZA-2410 | Install Chambers & Valves | 2027-03-31 → 2027-04-07 (+7d) | 2027-04-18 → 2027-04-25 (+7d) | 9d → 3d |
| 2 | **Testing** | 2027-04-19 → 2027-04-26 (+7d) | 2027-04-27 → 2027-05-04 (+7d) |  |
| SDR-2-CON-PW-ZA-2390 | Testing for Chambers & Valves | 2027-04-19 → 2027-04-26 (+7d) | 2027-04-27 → 2027-05-04 (+7d) | 9d → 3d |
| 6 | **Backfilling** | 2027-04-28 → 2027-05-05 (+7d) | 2027-05-06 → 2027-05-13 (+7d) |  |
| SDR-2-CON-PW-ZA-2420 | Backfilling for Chambers & Valves | 2027-04-28 → 2027-05-05 (+7d) | 2027-05-06 → 2027-05-13 (+7d) | 19d → 13d |
| 10 | **PORTABLE WATER IN ( PH2-ART-MC10 )** |  | 2027-05-23 → 2027-05-30 (+7d) |  |

| ID | Task | Start | Finish | Total float |
| --- | --- | --- | --- | --- |
| 7 | **Pipes Work** |  | 2027-05-23 → 2027-05-30 (+7d) |  |
| 1 | **Excavation** |  | 2027-02-04 → 2027-02-11 (+7d) |  |
| SDR-2-CON-PW-ZA-3930 | Excavation for PW HDPE Pipes 315 mm Section 1 |  | 2027-01-11 → 2027-01-18 (+7d) | 22d → 26d |
| SDR-2-CON-PW-ZA-2460 | Excavation for PW HDPE Pipes 315 mm Section 2 |  | 2027-02-04 → 2027-02-11 (+7d) | 32d → 26d |
| 8 | **bedding Works** |  | 2027-03-01 → 2027-03-08 (+7d) |  |
| SDR-2-CON-PW-ZA-2540 | Sand bedding for PW HDPE Pipes 315 mm |  | 2027-03-01 → 2027-03-08 (+7d) | 32d → 26d |
| 2 | **Pipes Laying** |  | 2027-03-23 → 2027-03-30 (+7d) |  |
| SDR-2-CON-PW-ZA-2470 | Install PW 315 mm HDPE Pipe |  | 2027-03-23 → 2027-03-30 (+7d) | 32d → 26d |
| 5 | **Testing** | 2027-03-24 → 2027-03-31 (+7d) | 2027-03-31 → 2027-04-07 (+7d) |  |
| SDR-2-CON-PW-ZA-2530 | Testing of PW HDPE Pipe 315 mm. | 2027-03-24 → 2027-03-31 (+7d) | 2027-03-31 → 2027-04-07 (+7d) | 32d → 26d |
| 9 | **Backfilling** | 2027-05-06 → 2027-05-13 (+7d) | 2027-05-23 → 2027-05-30 (+7d) |  |
| SDR-2-CON-PW-ZA-2550 | Backfilling of PW HDPE Pipe 315 mm. | 2027-05-06 → 2027-05-13 (+7d) | 2027-05-23 → 2027-05-30 (+7d) | 10d → 4d |
| 3 | **Valve Chambers & Valves & Fire Hydrant** | 2027-01-12 → 2027-01-19 (+7d) | 2027-05-08 → 2027-05-15 (+7d) |  |
| 3 | **Excavation** | 2027-01-12 → 2027-01-19 (+7d) | 2027-03-03 → 2027-03-15 (+12d) |  |
| SDR-2-CON-PW-ZA-3940 | Excavation for Valve Chambers Section 1 | 2027-01-12 → 2027-01-19 (+7d) | 2027-02-06 → 2027-02-13 (+7d) | 0.74d → 4.74d |
| SDR-2-CON-PW-ZA-2500 | Excavation for Valve Chambers Section 2 | 2027-02-06 → 2027-02-13 (+7d) | 2027-03-03 → 2027-03-15 (+12d) | 0.74d → 4.74d |
| 1 | **bedding Works** | 2027-03-03 → 2027-03-15 (+12d) | 2027-03-31 → 2027-04-07 (+7d) |  |
| SDR-2-CON-PW-ZA-2480 | Sand bedding for Valve Chambers | 2027-03-03 → 2027-03-15 (+12d) | 2027-03-31 → 2027-04-07 (+7d) | 0.74d → 4.74d |
| 4 | **Install Chambers & Valves & Fire Hydrant** | 2027-03-31 → 2027-04-07 (+7d) | 2027-04-17 → 2027-04-24 (+7d) |  |
| SDR-2-CON-PW-ZA-2510 | Install Chambers & Valves | 2027-03-31 → 2027-04-07 (+7d) | 2027-04-17 → 2027-04-24 (+7d) | 0.74d → 4.74d |
| 2 | **Testing** | 2027-04-17 → 2027-04-24 (+7d) | 2027-04-26 → 2027-05-03 (+7d) |  |
| SDR-2-CON-PW-ZA-2490 | Testing for Chambers & Valves | 2027-04-17 → 2027-04-24 (+7d) | 2027-04-26 → 2027-05-03 (+7d) | 0.74d → 4.74d |
| 6 | **Backfilling** | 2027-04-26 → 2027-05-03 (+7d) | 2027-05-08 → 2027-05-15 (+7d) |  |
| SDR-2-CON-PW-ZA-2520 | Backfilling for Chambers & Valves | 2027-04-26 → 2027-05-03 (+7d) | 2027-05-08 → 2027-05-15 (+7d) | 0.74d → 12.74d |
| ZG | **ZONE G** |  | 2027-05-02 → 2027-05-09 (+7d) |  |
| 1 | **PORTABLE WATER IN ( PH2-G-MCA0 )** |  | 2027-01-31 → 2027-02-07 (+7d) |  |
| 7 | **Pipes Work** |  | 2026-11-07 → 2026-11-14 (+7d) |  |
| 3 | **bedding Works** |  | 2026-10-12 → 2026-10-19 (+7d) |  |
| SDR-2-CON-PW-ZG-1500 | Sand bedding for PW HDPE Pipes 400 mm |  | 2026-10-12 → 2026-10-19 (+7d) | 151d → 145d |
| 2 | **Pipes Laying** |  | 2026-10-12 → 2026-10-19 (+7d) |  |
| SDR-2-CON-PW-ZG-1010 | Install PW 400 mm HDPE Pipe |  | 2026-10-12 → 2026-10-19 (+7d) | 151d → 145d |
| 5 | **Testing** | 2026-10-13 → 2026-10-20 (+7d) | 2026-10-24 → 2026-10-31 (+7d) |  |
| SDR-2-CON-PW-ZG-1080 | Testing of PW HDPE Pipe 400 mm. | 2026-10-13 → 2026-10-20 (+7d) | 2026-10-24 → 2026-10-31 (+7d) | 151d → 145d |
| 4 | **Backfilling** | 2026-10-25 → 2026-11-01 (+7d) | 2026-11-07 → 2026-11-14 (+7d) |  |
| SDR-2-CON-PW-ZG-1510 | Backfilling of PW HDPE Pipe 400 mm. | 2026-10-25 → 2026-11-01 (+7d) | 2026-11-07 → 2026-11-14 (+7d) | 151d → 145d |
| 3 | **Valve Chambers & Valves & Fire Hydrant** | 2026-10-12 → 2026-10-19 (+7d) | 2027-01-31 → 2027-02-07 (+7d) |  |
| 3 | **Excavation** | 2026-10-12 → 2026-10-19 (+7d) | 2026-11-29 → 2026-12-06 (+7d) |  |
| SDR-2-CON-PW-ZA-3950 | Excavation for Valve Chambers Section 1 | 2026-10-12 → 2026-10-19 (+7d) | 2026-11-04 → 2026-11-11 (+7d) | 78d → 72d |
| SDR-2-CON-PW-ZA-3680 | Excavation for Valve Chambers Section 2 | 2026-11-05 → 2026-11-12 (+7d) | 2026-11-29 → 2026-12-06 (+7d) | 78d → 72d |
| 1 | **bedding Works** | 2026-11-30 → 2026-12-07 (+7d) | 2026-12-20 → 2026-12-27 (+7d) |  |
| SDR-2-CON-PW-ZA-3660 | Sand bedding for Valve Chambers | 2026-11-30 → 2026-12-07 (+7d) | 2026-12-20 → 2026-12-27 (+7d) | 78d → 72d |
| 4 | **Install Chambers & Valves & Fire Hydrant** | 2026-12-21 → 2026-12-28 (+7d) | 2027-01-07 → 2027-01-14 (+7d) |  |
| SDR-2-CON-PW-ZA-3690 | Install Chambers & Valves | 2026-12-21 → 2026-12-28 (+7d) | 2027-01-07 → 2027-01-14 (+7d) | 78d → 72d |
| 2 | **Testing** | 2027-01-09 → 2027-01-16 (+7d) | 2027-01-19 → 2027-01-26 (+7d) |  |
| SDR-2-CON-PW-ZA-3670 | Testing for Chambers & Valves | 2027-01-09 → 2027-01-16 (+7d) | 2027-01-19 → 2027-01-26 (+7d) | 78d → 72d |
| 6 | **Backfilling** | 2027-01-20 → 2027-01-27 (+7d) | 2027-01-31 → 2027-02-07 (+7d) |  |
| SDR-2-CON-PW-ZA-3700 | Backfilling for Chambers & Valves | 2027-01-20 → 2027-01-27 (+7d) | 2027-01-31 → 2027-02-07 (+7d) | 78d → 72d |
| 2 | **PORTABLE WATER IN ( PH2-G-MCE0 )** |  | 2027-05-02 → 2027-05-09 (+7d) |  |
| 7 | **Pipes Work** |  | 2026-11-04 → 2026-11-11 (+7d) |  |
| 3 | **bedding Works** |  | 2026-10-12 → 2026-10-19 (+7d) |  |
| SDR-2-CON-PW-ZA-2940 | Sand bedding for PW HDPE Pipe 225 mm. |  | 2026-10-12 → 2026-10-19 (+7d) | 153d → 147d |
| 2 | **Pipes Laying** |  | 2026-10-12 → 2026-10-19 (+7d) |  |
| SDR-2-CON-PW-ZA-2920 | Install PW 225 mm HDPE Pipe |  | 2026-10-12 → 2026-10-19 (+7d) | 153d → 147d |
| 5 | **Testing** | 2026-10-13 → 2026-10-20 (+7d) | 2026-10-20 → 2026-10-27 (+7d) |  |
| SDR-2-CON-PW-ZA-2930 | Testing of PW HDPE Pipe 225 mm. | 2026-10-13 → 2026-10-20 (+7d) | 2026-10-20 → 2026-10-27 (+7d) | 153d → 147d |
| 4 | **Backfilling** | 2026-10-21 → 2026-10-28 (+7d) | 2026-11-04 → 2026-11-11 (+7d) |  |
| SDR-2-CON-PW-ZA-2950 | Backfilling of PW HDPE Pipe 225 mm. | 2026-10-21 → 2026-10-28 (+7d) | 2026-11-04 → 2026-11-11 (+7d) | 153d → 147d |
| 3 | **Valve Chambers & Valves & Fire Hydrant** | 2027-01-02 → 2027-01-09 (+7d) | 2027-05-02 → 2027-05-09 (+7d) |  |
| 3 | **Excavation** | 2027-01-02 → 2027-01-09 (+7d) | 2027-02-18 → 2027-02-27 (+9d) |  |
| SDR-2-CON-PW-ZA-3970 | Excavation for Valve Chambers Section 1 | 2027-01-02 → 2027-01-09 (+7d) | 2027-01-25 → 2027-02-01 (+7d) | 17d → 11d |
| SDR-2-CON-PW-ZA-2980 | Excavation for Valve Chambers Section 2 | 2027-01-26 → 2027-02-02 (+7d) | 2027-02-18 → 2027-02-27 (+9d) | 17d → 11d |
| 1 | **bedding Works** | 2027-02-20 → 2027-02-28 (+8d) | 2027-03-17 → 2027-03-24 (+7d) |  |
| SDR-2-CON-PW-ZA-2960 | Sand bedding for Valve Chambers | 2027-02-20 → 2027-02-28 (+8d) | 2027-03-17 → 2027-03-24 (+7d) | 17d → 11d |
| 4 | **Install Chambers & Valves & Fire Hydrant** | 2027-03-18 → 2027-03-25 (+7d) | 2027-04-06 → 2027-04-13 (+7d) |  |
| SDR-2-CON-PW-ZA-2990 | Install Chambers & Valves | 2027-03-18 → 2027-03-25 (+7d) | 2027-04-06 → 2027-04-13 (+7d) | 17d → 11d |
| 2 | **Testing** | 2027-04-07 → 2027-04-14 (+7d) | 2027-04-18 → 2027-04-25 (+7d) |  |
| SDR-2-CON-PW-ZA-2970 | Testing for Chambers & Valves | 2027-04-07 → 2027-04-14 (+7d) | 2027-04-18 → 2027-04-25 (+7d) | 17d → 11d |
| 6 | **Backfilling** | 2027-04-19 → 2027-04-26 (+7d) | 2027-05-02 → 2027-05-09 (+7d) |  |
| SDR-2-CON-PW-ZA-3000 | Backfilling for Chambers & Valves | 2027-04-19 → 2027-04-26 (+7d) | 2027-05-02 → 2027-05-09 (+7d) | 23d → 17d |
| 3 | **PORTABLE WATER IN ( PH2-G-MCF0 )** |  | 2027-04-20 → 2027-04-27 (+7d) |  |

| ID | Task | Start | Finish | Total float |
| --- | --- | --- | --- | --- |
| 7 | **Pipes Work** |  | 2027-01-12 → 2027-01-19 (+7d) |  |
| 3 | **bedding Works** |  | 2026-12-14 → 2026-12-21 (+7d) |  |
| SDR-2-CON-PW-ZA-3040 | Sand bedding for PW HDPE Pipe 225 mm. |  | 2026-12-14 → 2026-12-21 (+7d) | 94d → 88d |
| 5 | **Testing** | 2026-12-14 → 2026-12-21 (+7d) | 2026-12-22 → 2026-12-29 (+7d) |  |
| SDR-2-CON-PW-ZA-3030 | Testing of PW HDPE Pipe 225 mm. | 2026-12-14 → 2026-12-21 (+7d) | 2026-12-22 → 2026-12-29 (+7d) | 94d → 88d |
| 4 | **Backfilling** | 2026-12-23 → 2026-12-30 (+7d) | 2027-01-12 → 2027-01-19 (+7d) |  |
| SDR-2-CON-PW-ZA-3050 | Backfilling of PW HDPE Pipe 225 mm. | 2026-12-23 → 2026-12-30 (+7d) | 2027-01-12 → 2027-01-19 (+7d) | 94d → 88d |
| 3 | **Valve Chambers & Valves & Fire Hydrant** | 2026-12-14 → 2026-12-21 (+7d) | 2027-04-20 → 2027-04-27 (+7d) |  |
| 3 | **Excavation** | 2026-12-14 → 2026-12-21 (+7d) | 2027-01-31 → 2027-02-07 (+7d) |  |
| SDR-2-CON-PW-ZA-3990 | Excavation for Valve Chambers Section 1 | 2026-12-14 → 2026-12-21 (+7d) | 2027-01-06 → 2027-01-13 (+7d) | 15d → 9d |
| SDR-2-CON-PW-ZA-3080 | Excavation for Valve Chambers Section 2 | 2027-01-07 → 2027-01-14 (+7d) | 2027-01-31 → 2027-02-07 (+7d) | 15d → 9d |
| 1 | **bedding Works** | 2027-02-01 → 2027-02-08 (+7d) | 2027-02-24 → 2027-03-03 (+7d) |  |
| SDR-2-CON-PW-ZA-3060 | Sand bedding for Valve Chambers | 2027-02-01 → 2027-02-08 (+7d) | 2027-02-24 → 2027-03-03 (+7d) | 15d → 9d |
| 4 | **Install Chambers & Valves & Fire Hydrant** | 2027-02-25 → 2027-03-04 (+7d) | 2027-03-23 → 2027-03-30 (+7d) |  |
| SDR-2-CON-PW-ZA-3090 | Install Chambers & Valves | 2027-02-25 → 2027-03-04 (+7d) | 2027-03-23 → 2027-03-30 (+7d) | 15d → 9d |
| 2 | **Testing** | 2027-03-24 → 2027-03-31 (+7d) | 2027-04-01 → 2027-04-08 (+7d) |  |
| SDR-2-CON-PW-ZA-3070 | Testing for Chambers & Valves | 2027-03-24 → 2027-03-31 (+7d) | 2027-04-01 → 2027-04-08 (+7d) | 15d → 9d |
| 6 | **Backfilling** | 2027-04-03 → 2027-04-10 (+7d) | 2027-04-20 → 2027-04-27 (+7d) |  |
| SDR-2-CON-PW-ZA-3100 | Backfilling for Chambers & Valves | 2027-04-03 → 2027-04-10 (+7d) | 2027-04-20 → 2027-04-27 (+7d) | 15d → 9d |
| 4 | **PORTABLE WATER IN ( PH2-G-MCG0 )** |  | 2027-02-03 → 2027-02-10 (+7d) |  |
| 7 | **Pipes Work** |  | 2026-11-09 → 2026-11-16 (+7d) |  |
| 3 | **bedding Works** |  | 2026-10-12 → 2026-10-19 (+7d) |  |
| SDR-2-CON-PW-ZA-3140 | Sand bedding for PW HDPE Pipe 225 mm. |  | 2026-10-12 → 2026-10-19 (+7d) | 149d → 143d |
| 5 | **Testing** | 2026-10-12 → 2026-10-19 (+7d) | 2026-10-20 → 2026-10-27 (+7d) |  |
| SDR-2-CON-PW-ZA-3130 | Testing of PW HDPE Pipe 225 mm. | 2026-10-12 → 2026-10-19 (+7d) | 2026-10-20 → 2026-10-27 (+7d) | 149d → 143d |
| 4 | **Backfilling** | 2026-10-21 → 2026-10-28 (+7d) | 2026-11-09 → 2026-11-16 (+7d) |  |
| SDR-2-CON-PW-ZA-3150 | Backfilling of PW HDPE Pipe 225 mm. | 2026-10-21 → 2026-10-28 (+7d) | 2026-11-09 → 2026-11-16 (+7d) | 149d → 143d |
| 3 | **Valve Chambers & Valves & Fire Hydrant** | 2026-10-12 → 2026-10-19 (+7d) | 2027-02-03 → 2027-02-10 (+7d) |  |
| 3 | **Excavation** | 2026-10-12 → 2026-10-19 (+7d) | 2026-11-29 → 2026-12-06 (+7d) |  |
| SDR-2-CON-PW-ZA-4010 | Excavation for Valve Chambers Section 1 | 2026-10-12 → 2026-10-19 (+7d) | 2026-11-04 → 2026-11-11 (+7d) | 75d → 69d |
| SDR-2-CON-PW-ZA-3180 | Excavation for Valve Chambers Section 2 | 2026-11-05 → 2026-11-12 (+7d) | 2026-11-29 → 2026-12-06 (+7d) | 75d → 69d |
| 1 | **bedding Works** | 2026-11-30 → 2026-12-07 (+7d) | 2026-12-20 → 2026-12-27 (+7d) |  |
| SDR-2-CON-PW-ZA-3160 | Sand bedding for Valve Chambers | 2026-11-30 → 2026-12-07 (+7d) | 2026-12-20 → 2026-12-27 (+7d) | 75d → 69d |
| 4 | **Install Chambers & Valves & Fire Hydrant** | 2026-12-21 → 2026-12-28 (+7d) | 2027-01-05 → 2027-01-12 (+7d) |  |
| SDR-2-CON-PW-ZA-3190 | Install Chambers & Valves | 2026-12-21 → 2026-12-28 (+7d) | 2027-01-05 → 2027-01-12 (+7d) | 75d → 69d |
| 2 | **Testing** | 2027-01-06 → 2027-01-13 (+7d) | 2027-01-14 → 2027-01-21 (+7d) |  |
| SDR-2-CON-PW-ZA-3170 | Testing for Chambers & Valves | 2027-01-06 → 2027-01-13 (+7d) | 2027-01-14 → 2027-01-21 (+7d) | 75d → 69d |
| 6 | **Backfilling** | 2027-01-16 → 2027-01-23 (+7d) | 2027-02-03 → 2027-02-10 (+7d) |  |
| SDR-2-CON-PW-ZA-3200 | Backfilling for Chambers & Valves | 2027-01-16 → 2027-01-23 (+7d) | 2027-02-03 → 2027-02-10 (+7d) | 75d → 69d |
| 5 | **PORTABLE WATER IN ( PH2-G-MCZ0 )** |  | 2027-02-04 → 2027-02-11 (+7d) |  |
| 7 | **Pipes Work** |  | 2026-11-08 → 2026-11-15 (+7d) |  |
| 8 | **bedding Works** |  | 2026-10-12 → 2026-10-19 (+7d) |  |
| SDR-2-CON-PW-ZA-2640 | Sand bedding for PW HDPE Pipes 315 mm |  | 2026-10-12 → 2026-10-19 (+7d) | 150d → 144d |
| 2 | **Pipes Laying** |  | 2026-10-12 → 2026-10-19 (+7d) |  |
| SDR-2-CON-PW-ZA-2570 | Install PW 315 mm HDPE Pipe |  | 2026-10-12 → 2026-10-19 (+7d) | 150d → 144d |
| 5 | **Testing** | 2026-10-13 → 2026-10-20 (+7d) | 2026-10-19 → 2026-10-26 (+7d) |  |
| SDR-2-CON-PW-ZA-2630 | Testing of PW HDPE Pipe 315 mm. | 2026-10-13 → 2026-10-20 (+7d) | 2026-10-19 → 2026-10-26 (+7d) | 150d → 144d |
| 9 | **Backfilling** | 2026-10-20 → 2026-10-27 (+7d) | 2026-11-08 → 2026-11-15 (+7d) |  |
| SDR-2-CON-PW-ZA-2650 | Backfilling of PW HDPE Pipe 315 mm. | 2026-10-20 → 2026-10-27 (+7d) | 2026-11-08 → 2026-11-15 (+7d) | 150d → 144d |
| 3 | **Valve Chambers & Valves & Fire Hydrant** | 2026-10-12 → 2026-10-19 (+7d) | 2027-02-04 → 2027-02-11 (+7d) |  |
| 3 | **Excavation** | 2026-10-12 → 2026-10-19 (+7d) | 2026-11-29 → 2026-12-06 (+7d) |  |
| SDR-2-CON-PW-ZA-4030 | Excavation for Valve Chambers Section 1 | 2026-10-12 → 2026-10-19 (+7d) | 2026-11-04 → 2026-11-11 (+7d) | 74d → 68d |
| SDR-2-CON-PW-ZA-2600 | Excavation for Valve Chambers Section 2 | 2026-11-05 → 2026-11-12 (+7d) | 2026-11-29 → 2026-12-06 (+7d) | 74d → 68d |
| 1 | **bedding Works** | 2026-11-30 → 2026-12-07 (+7d) | 2026-12-21 → 2026-12-28 (+7d) |  |
| SDR-2-CON-PW-ZA-2580 | Sand bedding for Valve Chambers | 2026-11-30 → 2026-12-07 (+7d) | 2026-12-21 → 2026-12-28 (+7d) | 74d → 68d |
| 4 | **Install Chambers & Valves & Fire Hydrant** | 2026-12-22 → 2026-12-29 (+7d) | 2027-01-09 → 2027-01-16 (+7d) |  |
| SDR-2-CON-PW-ZA-2610 | Install Chambers & Valves | 2026-12-22 → 2026-12-29 (+7d) | 2027-01-09 → 2027-01-16 (+7d) | 74d → 68d |
| 2 | **Testing** | 2027-01-10 → 2027-01-17 (+7d) | 2027-01-16 → 2027-01-23 (+7d) |  |
| SDR-2-CON-PW-ZA-2590 | Testing for Chambers & Valves | 2027-01-10 → 2027-01-17 (+7d) | 2027-01-16 → 2027-01-23 (+7d) | 74d → 68d |
| 6 | **Backfilling** | 2027-01-17 → 2027-01-24 (+7d) | 2027-02-04 → 2027-02-11 (+7d) |  |
| SDR-2-CON-PW-ZA-2620 | Backfilling for Chambers & Valves | 2027-01-17 → 2027-01-24 (+7d) | 2027-02-04 → 2027-02-11 (+7d) | 74d → 68d |
| EW | **Electrical Works** |  | 2027-03-04 → 2027-03-16 (+12d) |  |
| ZA | **ZONE A** |  | 2027-03-04 → 2027-03-16 (+12d) |  |
| 1 | **Street Lighting Network** |  | 2027-03-04 → 2027-03-16 (+12d) |  |
| 16 | **Street Lighting Network IN ( PH2-COL-MC10 )** |  | 2027-02-25 → 2027-03-04 (+7d) |  |
| 10 | **Excavation** |  | 2026-10-12 → 2026-10-19 (+7d) |  |
| SDR-2-CON-SL-ZA-1000 | Excavation for LV Cable Trenches |  | 2026-10-12 → 2026-10-19 (+7d) |  |
| 11 | **Install Footings** |  | 2026-12-20 → 2026-12-27 (+7d) |  |
| SDR-2-CON-SL-ZA-1010 | Install Footings |  | 2026-12-20 → 2026-12-27 (+7d) | 2d → 7d |
| 12 | **Backfilling** | 2026-12-21 → 2026-12-28 (+7d) | 2027-01-13 → 2027-01-20 (+7d) |  |

| ID | Task | Start | Finish | Total float |
| --- | --- | --- | --- | --- |
| SDR-2-CON-SL-ZA-1110 | Backfilling over LV Cables of Street lighting | 2026-12-21 → 2026-12-28 (+7d) | 2027-01-13 → 2027-01-20 (+7d) | 2d → 7d |
| 13 | **Install pole** | 2027-02-01 → 2027-02-08 (+7d) | 2027-02-25 → 2027-03-04 (+7d) |  |
| SDR-2-CON-SL-ZA-1100 | Install Pole | 2027-02-01 → 2027-02-08 (+7d) | 2027-02-25 → 2027-03-04 (+7d) | 2d → 7d |
| 17 | **Street Lighting Network IN ( PH2-COL-MC20 )** |  | 2027-01-09 → 2027-01-30 (+21d) |  |
| 10 | **Excavation** |  | 2026-10-12 → 2026-10-19 (+7d) |  |
| SDR-2-CON-SL-ZA-2870 | Excavation for LV Cable Trenches |  | 2026-10-12 → 2026-10-19 (+7d) | 61d → 66d |
| 11 | **Install Footings** |  | 2026-10-18 → 2026-11-24 (+37d) |  |
| SDR-2-CON-SL-ZA-2880 | Install Footings |  | 2026-10-18 → 2026-11-24 (+37d) | 56d → 35d |
| 12 | **Backfilling** | 2026-10-19 → 2026-11-25 (+37d) | 2026-11-11 → 2026-12-19 (+38d) |  |
| SDR-2-CON-SL-ZA-2900 | Backfilling over LV Cables of Street lighting | 2026-10-19 → 2026-11-25 (+37d) | 2026-11-11 → 2026-12-19 (+38d) | 56d → 35d |
| 13 | **Install pole** | 2026-12-16 → 2027-01-06 (+21d) | 2027-01-09 → 2027-01-30 (+21d) |  |
| SDR-2-CON-SL-ZA-2890 | Install Pole | 2026-12-16 → 2027-01-06 (+21d) | 2027-01-09 → 2027-01-30 (+21d) | 42d → 35d |
| 18 | **Street Lighting Network IN ( PH2-A-MCA0 )** |  | 2026-12-26 → 2027-01-02 (+7d) |  |
| 10 | **Excavation** |  | 2026-10-12 → 2026-10-19 (+7d) |  |
| SDR-2-CON-SL-ZA-3610 | Excavation for LV Cable Drawpits |  | 2026-10-12 → 2026-10-19 (+7d) | 17d → 11d |
| SDR-2-CON-SL-ZA-1300 | Excavation for LV Cable Trenches |  | 2026-10-12 → 2026-10-19 (+7d) | 60d → 54d |
| 11 | **Install Footings** |  | 2026-11-14 → 2026-11-21 (+7d) |  |
| SDR-2-CON-SL-ZA-1310 | Install Footings |  | 2026-11-14 → 2026-11-21 (+7d) | 32d → 26d |
| 12 | **Backfilling** | 2026-11-08 → 2026-11-15 (+7d) | 2026-12-01 → 2026-12-08 (+7d) |  |
| SDR-2-CON-SL-ZA-1410 | Backfilling over LV Cables of Street lighting | 2026-11-08 → 2026-11-15 (+7d) | 2026-12-01 → 2026-12-08 (+7d) | 32d → 26d |
| 13 | **Install pole** | 2026-12-02 → 2026-12-09 (+7d) | 2026-12-26 → 2027-01-02 (+7d) |  |
| SDR-2-CON-SL-ZA-1400 | Install Pole | 2026-12-02 → 2026-12-09 (+7d) | 2026-12-26 → 2027-01-02 (+7d) | 32d → 26d |
| 19 | **Street Lighting Network IN ( PH2-A-MCB0 )** |  | 2026-12-14 → 2026-12-21 (+7d) |  |
| 10 | **Excavation** |  | 2026-10-12 → 2026-10-19 (+7d) |  |
| SDR-2-CON-SL-ZA-3620 | Excavation for LV Cable Drawpits |  | 2026-10-12 → 2026-10-19 (+7d) | 17d → 11d |
| SDR-2-CON-SL-ZA-2950 | Excavation for LV Cable Trenches |  | 2026-10-12 → 2026-10-19 (+7d) | 17d → 11d |
| 11 | **Install Footings** |  | 2026-10-14 → 2026-10-21 (+7d) |  |
| SDR-2-CON-SL-ZA-2960 | Install Footings |  | 2026-10-14 → 2026-10-21 (+7d) | 15d → 9d |
| 12 | **Backfilling** | 2026-10-15 → 2026-10-22 (+7d) | 2026-11-08 → 2026-11-15 (+7d) |  |
| SDR-2-CON-SL-ZA-2980 | Backfilling over LV Cables of Street lighting | 2026-10-15 → 2026-10-22 (+7d) | 2026-11-08 → 2026-11-15 (+7d) | 15d → 9d |
| 13 | **Install pole** | 2026-11-21 → 2026-11-28 (+7d) | 2026-12-14 → 2026-12-21 (+7d) |  |
| SDR-2-CON-SL-ZA-2970 | Install Pole | 2026-11-21 → 2026-11-28 (+7d) | 2026-12-14 → 2026-12-21 (+7d) | 15d → 9d |
| 20 | **Street Lighting Network IN ( PH2-A-MCC0 )** |  | 2026-12-23 → 2026-12-30 (+7d) |  |
| 10 | **Excavation** |  | 2026-10-12 → 2026-10-19 (+7d) |  |
| SDR-2-CON-SL-ZA-3630 | Excavation for LV Cable Drawpits |  | 2026-10-12 → 2026-10-19 (+7d) | 34d → 28d |
| SDR-2-CON-SL-ZA-2990 | Excavation for LV Cable Trenches |  | 2026-10-12 → 2026-10-19 (+7d) | 60d → 54d |
| 11 | **Install Footings** |  | 2026-10-18 → 2026-10-25 (+7d) |  |
| SDR-2-CON-SL-ZA-3000 | Install Footings |  | 2026-10-18 → 2026-10-25 (+7d) | 55d → 49d |
| 12 | **Backfilling** | 2026-10-19 → 2026-10-26 (+7d) | 2026-11-11 → 2026-11-18 (+7d) |  |
| SDR-2-CON-SL-ZA-3020 | Backfilling over LV Cables of Street lighting | 2026-10-19 → 2026-10-26 (+7d) | 2026-11-11 → 2026-11-18 (+7d) | 55d → 49d |
| 13 | **Install pole** | 2026-11-30 → 2026-12-07 (+7d) | 2026-12-23 → 2026-12-30 (+7d) |  |
| SDR-2-CON-SL-ZA-3010 | Install Pole | 2026-11-30 → 2026-12-07 (+7d) | 2026-12-23 → 2026-12-30 (+7d) | 55d → 49d |
| 21 | **Street Lighting Network IN ( PH2-A-MCD0 )** |  | 2027-03-04 → 2027-03-16 (+12d) |  |
| 10 | **Excavation** |  | 2026-10-12 → 2026-10-19 (+7d) |  |
| SDR-2-CON-SL-ZA-3640 | Excavation for LV Cable Drawpits |  | 2026-10-12 → 2026-10-19 (+7d) | 34d → 28d |
| SDR-2-CON-SL-ZA-3030 | Excavation for LV Cable Trenches |  | 2026-10-12 → 2026-10-19 (+7d) | 81d → 75d |
| 11 | **Install Footings** |  | 2026-10-18 → 2026-10-25 (+7d) |  |
| SDR-2-CON-SL-ZA-3040 | Install Footings |  | 2026-10-18 → 2026-10-25 (+7d) | 76d → 70d |
| 12 | **Backfilling** | 2026-10-19 → 2026-10-26 (+7d) | 2026-11-11 → 2026-11-18 (+7d) |  |
| SDR-2-CON-SL-ZA-3060 | Backfilling over LV Cables of Street lighting | 2026-10-19 → 2026-10-26 (+7d) | 2026-11-11 → 2026-11-18 (+7d) | 76d → 70d |
| 13 | **Install pole** | 2027-02-08 → 2027-02-15 (+7d) | 2027-03-04 → 2027-03-16 (+12d) |  |
| SDR-2-CON-SL-ZA-3050 | Install Pole | 2027-02-08 → 2027-02-15 (+7d) | 2027-03-04 → 2027-03-16 (+12d) | 16d → 10d |
| 22 | **Street Lighting Network IN ( PH2-A-MCE0 )** |  | 2026-12-21 → 2026-12-28 (+7d) |  |
| 10 | **Excavation** |  | 2026-10-12 → 2026-10-19 (+7d) |  |
| SDR-2-CON-SL-ZA-3650 | Excavation for LV Cable Drawpits |  | 2026-10-12 → 2026-10-19 (+7d) | 34d → 28d |
| SDR-2-CON-SL-ZA-3070 | Excavation for LV Cable Trenches |  | 2026-10-12 → 2026-10-19 (+7d) | 101d → 95d |
| 11 | **Install Footings** |  | 2026-10-18 → 2026-10-25 (+7d) |  |
| SDR-2-CON-SL-ZA-3080 | Install Footings |  | 2026-10-18 → 2026-10-25 (+7d) | 96d → 90d |
| 12 | **Backfilling** | 2026-10-19 → 2026-10-26 (+7d) | 2026-11-11 → 2026-11-18 (+7d) |  |
| SDR-2-CON-SL-ZA-3100 | Backfilling over LV Cables of Street lighting | 2026-10-19 → 2026-10-26 (+7d) | 2026-11-11 → 2026-11-18 (+7d) | 96d → 90d |
| 13 | **Install pole** | 2026-11-30 → 2026-12-07 (+7d) | 2026-12-21 → 2026-12-28 (+7d) |  |
| SDR-2-CON-SL-ZA-3090 | Install Pole | 2026-11-30 → 2026-12-07 (+7d) | 2026-12-21 → 2026-12-28 (+7d) | 96d → 90d |
| 23 | **Street Lighting Network IN ( PH2-A-MCF0 )** |  | 2026-12-26 → 2027-01-02 (+7d) |  |
| 10 | **Excavation** |  | 2026-10-21 → 2026-10-28 (+7d) |  |
| SDR-2-CON-SL-ZA-3660 | Excavation for LV Cable Drawpits |  | 2026-10-21 → 2026-10-28 (+7d) | 26d → 20d |
| SDR-2-CON-SL-ZA-3110 | Excavation for LV Cable Trenches |  | 2026-10-21 → 2026-10-28 (+7d) | 26d → 20d |
| 11 | **Install Footings** |  | 2026-10-21 → 2026-10-28 (+7d) |  |
| SDR-2-CON-SL-ZA-3120 | Install Footings |  | 2026-10-21 → 2026-10-28 (+7d) | 26d → 20d |
| 12 | **Backfilling** | 2026-10-22 → 2026-10-29 (+7d) | 2026-11-14 → 2026-11-21 (+7d) |  |
| SDR-2-CON-SL-ZA-3140 | Backfilling over LV Cables of Street lighting | 2026-10-22 → 2026-10-29 (+7d) | 2026-11-14 → 2026-11-21 (+7d) | 26d → 20d |

| ID | Task | Start | Finish | Total float |
| --- | --- | --- | --- | --- |
| 13 | **Install pole** | 2026-12-02 → 2026-12-09 (+7d) | 2026-12-26 → 2027-01-02 (+7d) |  |
| SDR-2-CON-SL-ZA-3130 | Install Pole | 2026-12-02 → 2026-12-09 (+7d) | 2026-12-26 → 2027-01-02 (+7d) | 26d → 20d |
| 24 | **Street Lighting Network IN ( PH2-A-MCG0 )** |  | 2026-12-14 → 2026-12-21 (+7d) |  |
| 10 | **Excavation** |  | 2026-10-21 → 2026-10-28 (+7d) |  |
| SDR-2-CON-SL-ZA-3670 | Excavation for LV Cable Drawpits |  | 2026-10-21 → 2026-10-28 (+7d) | 37d → 31d |
| SDR-2-CON-SL-ZA-3150 | Excavation for LV Cable Trenches |  | 2026-10-21 → 2026-10-28 (+7d) | 102d → 96d |
| 11 | **Install Footings** |  | 2026-10-21 → 2026-10-28 (+7d) |  |
| SDR-2-CON-SL-ZA-3160 | Install Footings |  | 2026-10-21 → 2026-10-28 (+7d) | 102d → 96d |
| 12 | **Backfilling** | 2026-10-22 → 2026-10-29 (+7d) | 2026-11-12 → 2026-11-19 (+7d) |  |
| SDR-2-CON-SL-ZA-3180 | Backfilling over LV Cables of Street lighting | 2026-10-22 → 2026-10-29 (+7d) | 2026-11-12 → 2026-11-19 (+7d) | 102d → 96d |
| 13 | **Install pole** | 2026-12-01 → 2026-12-08 (+7d) | 2026-12-14 → 2026-12-21 (+7d) |  |
| SDR-2-CON-SL-ZA-3170 | Install Pole | 2026-12-01 → 2026-12-08 (+7d) | 2026-12-14 → 2026-12-21 (+7d) | 102d → 96d |
| 25 | **Street Lighting Network IN ( PH2-A-MCH0 )** |  | 2026-12-20 → 2026-12-27 (+7d) |  |
| 10 | **Excavation** |  | 2026-10-21 → 2026-10-28 (+7d) |  |
| SDR-2-CON-SL-ZA-3680 | Excavation for LV Cable Drawpits |  | 2026-10-21 → 2026-10-28 (+7d) | 37d → 31d |
| SDR-2-CON-SL-ZA-3190 | Excavation for LV Cable Trenches |  | 2026-10-21 → 2026-10-28 (+7d) | 37d → 31d |
| 11 | **Install Footings** |  | 2026-10-21 → 2026-10-28 (+7d) |  |
| SDR-2-CON-SL-ZA-3200 | Install Footings |  | 2026-10-21 → 2026-10-28 (+7d) | 37d → 31d |
| 12 | **Backfilling** | 2026-10-22 → 2026-10-29 (+7d) | 2026-11-12 → 2026-11-19 (+7d) |  |
| SDR-2-CON-SL-ZA-3220 | Backfilling over LV Cables of Street lighting | 2026-10-22 → 2026-10-29 (+7d) | 2026-11-12 → 2026-11-19 (+7d) | 37d → 31d |
| 13 | **Install pole** | 2026-12-01 → 2026-12-08 (+7d) | 2026-12-20 → 2026-12-27 (+7d) |  |
| SDR-2-CON-SL-ZA-3210 | Install Pole | 2026-12-01 → 2026-12-08 (+7d) | 2026-12-20 → 2026-12-27 (+7d) | 37d → 31d |
| 27 | **Street Lighting Network IN ( PH2-ART-MC10 )** |  | 2026-12-24 → 2026-12-31 (+7d) |  |
| 10 | **Excavation** |  | 2026-10-21 → 2026-10-28 (+7d) |  |
| SDR-2-CON-SL-ZA-3690 | Excavation for LV Cable Drawpits |  | 2026-10-21 → 2026-10-28 (+7d) | 45d → 41d |
| SDR-2-CON-SL-ZA-2910 | Excavation for LV Cable Trenches |  | 2026-10-21 → 2026-10-28 (+7d) | 47d → 41d |
| 11 | **Install Footings** |  | 2026-10-21 → 2026-10-28 (+7d) |  |
| SDR-2-CON-SL-ZA-2920 | Install Footings |  | 2026-10-21 → 2026-10-28 (+7d) | 47d → 41d |
| 12 | **Backfilling** | 2026-10-22 → 2026-10-29 (+7d) | 2026-11-15 → 2026-11-22 (+7d) |  |
| SDR-2-CON-SL-ZA-2940 | Backfilling over LV Cables of Street lighting | 2026-10-22 → 2026-10-29 (+7d) | 2026-11-15 → 2026-11-22 (+7d) | 47d → 41d |
| 13 | **Install pole** | 2026-12-01 → 2026-12-08 (+7d) | 2026-12-24 → 2026-12-31 (+7d) |  |
| SDR-2-CON-SL-ZA-2930 | Install Pole | 2026-12-01 → 2026-12-08 (+7d) | 2026-12-24 → 2026-12-31 (+7d) | 97d → 91d |
| 10 | **Lighting Pole Panels** | 2026-10-22 → 2026-10-29 (+7d) | 2027-02-09 → 2027-02-16 (+7d) |  |
| 1 | **Excavation** | 2026-10-22 → 2026-10-29 (+7d) | 2026-11-15 → 2026-11-22 (+7d) |  |
| SDR-2-CON-SL-ZA-2650 | Street Lighting Panels Excavation | 2026-10-22 → 2026-10-29 (+7d) | 2026-11-15 → 2026-11-22 (+7d) | 44d → 43d |
| 2 | **Install Footings** | 2026-11-16 → 2026-11-23 (+7d) | 2026-12-08 → 2026-12-15 (+7d) |  |
| SDR-2-CON-SL-ZA-2760 | Installation Footings Street Lighting Panels | 2026-11-16 → 2026-11-23 (+7d) | 2026-12-08 → 2026-12-15 (+7d) | 57d → 51d |
| 3 | **Backfilling** | 2026-12-09 → 2026-12-16 (+7d) | 2026-12-29 → 2027-01-05 (+7d) |  |
| SDR-2-CON-SL-ZA-2770 | Street Lighting Panels Backfilling | 2026-12-09 → 2026-12-16 (+7d) | 2026-12-29 → 2027-01-05 (+7d) | 57d → 51d |
| 4 | **Install pole** | 2027-01-17 → 2027-01-24 (+7d) | 2027-02-09 → 2027-02-16 (+7d) |  |
| SDR-2-CON-SL-ZA-2780 | Street Lighting Panels Installation | 2027-01-17 → 2027-01-24 (+7d) | 2027-02-09 → 2027-02-16 (+7d) | 57d → 51d |
| 11 | **Ring Main Unit** | 2026-10-22 → 2026-10-29 (+7d) | 2027-01-11 → 2027-01-18 (+7d) |  |
| 1 | **Leveling** | 2026-10-22 → 2026-10-29 (+7d) | 2026-11-14 → 2026-11-21 (+7d) |  |
| SDR-2-CON-SL-ZA-2660 | Ring Main Unit leveling | 2026-10-22 → 2026-10-29 (+7d) | 2026-11-14 → 2026-11-21 (+7d) | 44d → 43d |
| 2 | **Lean Concrete** | 2026-11-15 → 2026-11-22 (+7d) | 2026-12-07 → 2026-12-14 (+7d) |  |
| SDR-2-CON-SL-ZA-2790 | Ring Main Unit Lean Concrete | 2026-11-15 → 2026-11-22 (+7d) | 2026-12-07 → 2026-12-14 (+7d) | 45d → 76d |
| 3 | **Installation** | 2026-12-20 → 2026-12-27 (+7d) | 2027-01-11 → 2027-01-18 (+7d) |  |
| SDR-2-CON-SL-ZA-2800 | Ring Main Unit installation for Street Lighting | 2026-12-20 → 2026-12-27 (+7d) | 2027-01-11 → 2027-01-18 (+7d) | 45d → 76d |
| 12 | **Feeder Pillars** | 2026-11-08 → 2026-10-31 (-8d) | 2027-02-02 → 2027-01-25 (-8d) |  |
| 1 | **Leveling** | 2026-11-08 → 2026-10-31 (-8d) | 2026-11-30 → 2026-11-22 (-8d) |  |
| SDR-2-CON-SL-ZA-2670 | Feeder Pillars Leveling | 2026-11-08 → 2026-10-31 (-8d) | 2026-11-30 → 2026-11-22 (-8d) | 30d → 42d |
| 2 | **Lean Concrete** | 2026-12-01 → 2026-11-23 (-8d) | 2026-12-23 → 2026-12-15 (-8d) |  |
| SDR-2-CON-SL-ZA-2810 | Feeder Pillars Lean Concrete | 2026-12-01 → 2026-11-23 (-8d) | 2026-12-23 → 2026-12-15 (-8d) | 43d → 70d |
| 3 | **Installation** | 2027-01-11 → 2027-01-03 (-8d) | 2027-02-02 → 2027-01-25 (-8d) |  |
| SDR-2-CON-SL-ZA-2820 | Feeder Pillars Installation | 2027-01-11 → 2027-01-03 (-8d) | 2027-02-02 → 2027-01-25 (-8d) | 43d → 70d |
| 13 | **KWH Frame** | 2026-12-12 → 2026-12-19 (+7d) | 2027-02-18 → 2027-02-27 (+9d) |  |
| 1 | **Leveling** | 2026-12-12 → 2026-12-19 (+7d) | 2027-01-03 → 2027-01-10 (+7d) |  |
| SDR-2-CON-SL-ZA-2680 | KWH meter mounting frame Leveling | 2026-12-12 → 2026-12-19 (+7d) | 2027-01-03 → 2027-01-10 (+7d) | 2d → 10d |
| 2 | **Lean Concrete** | 2027-01-04 → 2027-01-11 (+7d) | 2027-01-26 → 2027-02-02 (+7d) |  |
| SDR-2-CON-SL-ZA-2830 | KWH meter mounting frame Lean Concrete | 2027-01-04 → 2027-01-11 (+7d) | 2027-01-26 → 2027-02-02 (+7d) | 12d → 43d |
| 3 | **Installation** | 2027-01-27 → 2027-02-03 (+7d) | 2027-02-18 → 2027-02-27 (+9d) |  |
| SDR-2-CON-SL-ZA-2840 | KWH meter mounting frame installation | 2027-01-27 → 2027-02-03 (+7d) | 2027-02-18 → 2027-02-27 (+9d) | 12d → 43d |
| 14 | **Street Lighting Sub-station** | 2026-12-13 → 2026-12-20 (+7d) | 2027-02-21 → 2027-03-01 (+8d) |  |
| 1 | **Leveling** | 2026-12-13 → 2026-12-20 (+7d) | 2027-01-04 → 2027-01-11 (+7d) |  |
| SDR-2-CON-SL-ZA-2690 | Unit Substation Leveling | 2026-12-13 → 2026-12-20 (+7d) | 2027-01-04 → 2027-01-11 (+7d) | 2d → 33d |
| 2 | **Lean Concrete** | 2027-01-05 → 2027-01-12 (+7d) | 2027-01-27 → 2027-02-03 (+7d) |  |
| SDR-2-CON-SL-ZA-2850 | Unit Substation Lean Concrete | 2027-01-05 → 2027-01-12 (+7d) | 2027-01-27 → 2027-02-03 (+7d) | 10d → 41d |
| 3 | **Installation** | 2027-01-28 → 2027-02-04 (+7d) | 2027-02-21 → 2027-03-01 (+8d) |  |
| SDR-2-CON-SL-ZA-2860 | Unit Substation Install for Street Lighting | 2027-01-28 → 2027-02-04 (+7d) | 2027-02-21 → 2027-03-01 (+8d) | 10d → 41d |
| 2 | **MV Network** |  | 2026-12-16 → 2026-12-23 (+7d) |  |

| ID | Task | Start | Finish | Total float |
| --- | --- | --- | --- | --- |
| 1 | **LOOP 3** |  | 2026-11-05 → 2026-11-12 (+7d) |  |
| 6 | **Excavation** |  | 2026-10-12 → 2026-10-19 (+7d) |  |
| SDR-2-CON-MV-ZA-1000 | Excavation Works |  | 2026-10-12 → 2026-10-19 (+7d) | 19d → 14d |
| 7 | **Pipe laying** |  | 2026-10-12 → 2026-10-19 (+7d) |  |
| SDR-2-CON-MV-ZA-1070 | Pipe Laying |  | 2026-10-12 → 2026-10-19 (+7d) | 29d → 28d |
| 8 | **Backfilling** |  | 2026-10-12 → 2026-10-19 (+7d) |  |
| SDR-2-CON-MV-ZA-1150 | Backfilling Works |  | 2026-10-12 → 2026-10-19 (+7d) | 29d → 28d |
| 9 | **Pulling Cable** | 2026-10-13 → 2026-10-20 (+7d) | 2026-11-05 → 2026-11-12 (+7d) |  |
| SDR-2-CON-MV-ZA-1100 | Pulling Cable | 2026-10-13 → 2026-10-20 (+7d) | 2026-11-05 → 2026-11-12 (+7d) | 29d → 28d |
| 2 | **LOOP 4** |  | 2026-12-16 → 2026-12-23 (+7d) |  |
| 6 | **Excavation** |  | 2026-10-12 → 2026-10-19 (+7d) |  |
| SDR-2-CON-MV-ZA-1160 | Excavation Works |  | 2026-10-12 → 2026-10-19 (+7d) | 20d → 14d |
| 7 | **Pipe laying** |  | 2026-10-12 → 2026-10-19 (+7d) |  |
| SDR-2-CON-MV-ZA-1170 | Pipe Laying |  | 2026-10-12 → 2026-10-19 (+7d) | 20d → 14d |
| 8 | **Backfilling** | 2026-10-13 → 2026-10-20 (+7d) | 2026-11-05 → 2026-11-12 (+7d) |  |
| SDR-2-CON-MV-ZA-1190 | Backfilling Works | 2026-10-13 → 2026-10-20 (+7d) | 2026-11-05 → 2026-11-12 (+7d) | 20d → 14d |
| 9 | **Pulling Cable** | 2026-11-23 → 2026-11-30 (+7d) | 2026-12-16 → 2026-12-23 (+7d) |  |
| SDR-2-CON-MV-ZA-1180 | Pulling Cable | 2026-11-23 → 2026-11-30 (+7d) | 2026-12-16 → 2026-12-23 (+7d) | 20d → 14d |
| 3 | **LOOP 5** |  | 2026-12-09 → 2026-12-16 (+7d) |  |
| 6 | **Excavation** |  | 2026-10-12 → 2026-10-19 (+7d) |  |
| SDR-2-CON-MV-ZA-1200 | Excavation Works |  | 2026-10-12 → 2026-10-19 (+7d) | 26d → 20d |
| 7 | **Pipe laying** |  | 2026-10-12 → 2026-10-19 (+7d) |  |
| SDR-2-CON-MV-ZA-1210 | Pipe Laying |  | 2026-10-12 → 2026-10-19 (+7d) | 26d → 20d |
| 8 | **Backfilling** | 2026-10-13 → 2026-10-20 (+7d) | 2026-11-05 → 2026-11-12 (+7d) |  |
| SDR-2-CON-MV-ZA-1230 | Backfilling Works | 2026-10-13 → 2026-10-20 (+7d) | 2026-11-05 → 2026-11-12 (+7d) | 26d → 20d |
| 9 | **Pulling Cable** | 2026-11-16 → 2026-11-23 (+7d) | 2026-12-09 → 2026-12-16 (+7d) |  |
| SDR-2-CON-MV-ZA-1220 | Pulling Cable | 2026-11-16 → 2026-11-23 (+7d) | 2026-12-09 → 2026-12-16 (+7d) | 26d → 20d |
| 4 | **LOOP 6** |  | 2026-12-07 → 2026-12-14 (+7d) |  |
| 6 | **Excavation** |  | 2026-10-12 → 2026-10-19 (+7d) |  |
| SDR-2-CON-MV-ZA-1240 | Excavation Works |  | 2026-10-12 → 2026-10-19 (+7d) | 31d → 35d |
| 7 | **Pipe laying** |  | 2026-10-12 → 2026-10-19 (+7d) |  |
| SDR-2-CON-MV-ZA-1250 | Pipe Laying |  | 2026-10-12 → 2026-10-19 (+7d) | 31d → 35d |
| 8 | **Backfilling** | 2026-10-13 → 2026-10-20 (+7d) | 2026-11-05 → 2026-11-12 (+7d) |  |
| SDR-2-CON-MV-ZA-1270 | Backfilling Works | 2026-10-13 → 2026-10-20 (+7d) | 2026-11-05 → 2026-11-12 (+7d) | 31d → 35d |
| 9 | **Pulling Cable** | 2026-11-14 → 2026-11-21 (+7d) | 2026-12-07 → 2026-12-14 (+7d) |  |
| SDR-2-CON-MV-ZA-1260 | Pulling Cable | 2026-11-14 → 2026-11-21 (+7d) | 2026-12-07 → 2026-12-14 (+7d) | 31d → 35d |
| 3 | **TELECOMMUNICATIONS Works** |  | 2027-02-13 → 2027-02-20 (+7d) |  |
| 1 | **TELECOMMUNICATION IN ( PH2-COL-MC10 )** |  | 2027-02-08 → 2027-02-15 (+7d) |  |
| 3 | **Ducts** |  | 2027-02-08 → 2027-02-15 (+7d) |  |
| 2 | **Excavation** |  | 2026-11-21 → 2026-11-28 (+7d) |  |
| SDR-2-CON-TE-ZA-4560 | Excavation for telecom crossing ducts |  | 2026-10-27 → 2026-11-03 (+7d) | 1d → 5d |
| SDR-2-CON-TE-ZA-1000 | Excavation for telecom trenches | 2026-10-28 → 2026-11-04 (+7d) | 2026-11-21 → 2026-11-28 (+7d) | 28d → 36d |
| 5 | **Pipe laying** | 2026-11-22 → 2026-11-29 (+7d) | 2026-12-13 → 2026-12-20 (+7d) |  |
| SDR-2-CON-TE-ZA-1010 | HDPE Pipes for Telecom Installation | 2026-11-22 → 2026-11-29 (+7d) | 2026-12-13 → 2026-12-20 (+7d) | 28d → 36d |
| 6 | **Backfilling** | 2026-12-14 → 2026-12-21 (+7d) | 2027-01-03 → 2027-01-10 (+7d) |  |
| SDR-2-CON-TE-ZA-1020 | Backfilling over HDPE Telecom Pipes | 2026-12-14 → 2026-12-21 (+7d) | 2027-01-03 → 2027-01-10 (+7d) | 28d → 36d |
| 7 | **Pulling Cable** | 2027-01-16 → 2027-01-23 (+7d) | 2027-02-08 → 2027-02-15 (+7d) |  |
| SDR-2-CON-TE-ZA-1840 | Pulling Cable | 2027-01-16 → 2027-01-23 (+7d) | 2027-02-08 → 2027-02-15 (+7d) | 28d → 36d |
| 4 | **Manholes** |  | 2027-01-12 → 2027-01-19 (+7d) |  |
| 2 | **Bedding Work** |  | 2026-10-28 → 2026-11-04 (+7d) |  |
| SDR-2-CON-TE-ZA-1850 | Sand bedding for Telecom Manhole |  | 2026-10-28 → 2026-11-04 (+7d) | 0.74d → 4.74d |
| 3 | **Install Manholes** |  | 2026-11-21 → 2026-11-28 (+7d) |  |
| SDR-2-CON-TE-ZA-1040 | Installation of Telecom Manhole |  | 2026-11-21 → 2026-11-28 (+7d) | 0.74d → 4.74d |
| 4 | **Testting** | 2026-11-21 → 2026-11-28 (+7d) | 2026-12-07 → 2026-12-14 (+7d) |  |
| SDR-2-CON-TE-ZA-1050 | Telecom Manhole finishing works | 2026-11-21 → 2026-11-28 (+7d) | 2026-12-07 → 2026-12-14 (+7d) | 0.74d → 4.74d |
| 5 | **Backfilling** | 2026-12-19 → 2026-12-26 (+7d) | 2027-01-12 → 2027-01-19 (+7d) |  |
| SDR-2-CON-TE-ZA-1060 | Backfilling over Telecom Manhole | 2026-12-19 → 2026-12-26 (+7d) | 2027-01-12 → 2027-01-19 (+7d) | 0.74d → 4.74d |
| 2 | **TELECOMMUNICATION IN ( PH2-COL-MC20 )** |  | 2026-12-09 → 2026-12-16 (+7d) |  |
| 3 | **Ducts** |  | 2026-11-05 → 2026-11-12 (+7d) |  |
| 2 | **Excavation** |  | 2026-10-12 → 2026-10-19 (+7d) |  |
| SDR-2-CON-TE-ZA-3210 | Excavation for telecom crossing ducts & trenches |  | 2026-10-12 → 2026-10-19 (+7d) |  |
| 5 | **Pipe laying** |  | 2026-10-12 → 2026-10-19 (+7d) |  |
| SDR-2-CON-TE-ZA-3220 | HDPE Pipes for Telecom Installation |  | 2026-10-12 → 2026-10-19 (+7d) | 102d → 133d |
| 6 | **Backfilling** |  | 2026-10-12 → 2026-10-19 (+7d) |  |
| SDR-2-CON-TE-ZA-3230 | Backfilling over HDPE Telecom Pipes |  | 2026-10-12 → 2026-10-19 (+7d) | 102d → 133d |
| 7 | **Pulling Cable** | 2026-10-13 → 2026-10-20 (+7d) | 2026-11-05 → 2026-11-12 (+7d) |  |
| SDR-2-CON-TE-ZA-3280 | Pulling Cable | 2026-10-13 → 2026-10-20 (+7d) | 2026-11-05 → 2026-11-12 (+7d) | 102d → 133d |
| 4 | **Manholes** |  | 2026-12-09 → 2026-12-16 (+7d) |  |
| 2 | **Bedding Work** |  | 2026-10-18 → 2026-10-25 (+7d) |  |
| SDR-2-CON-TE-ZA-3290 | Sand bedding for Telecom Manhole |  | 2026-10-18 → 2026-10-25 (+7d) |  |

| ID | Task | Start | Finish | Total float |
| --- | --- | --- | --- | --- |
| 3 | **Install Manholes** |  | 2026-10-18 → 2026-10-25 (+7d) |  |
| SDR-2-CON-TE-ZA-3250 | Installation of Telecom Manhole |  | 2026-10-18 → 2026-10-25 (+7d) |  |
| 4 | **Testting** | 2026-10-19 → 2026-10-26 (+7d) | 2026-11-03 → 2026-11-10 (+7d) |  |
| SDR-2-CON-TE-ZA-3260 | Telecom Manhole finishing works | 2026-10-19 → 2026-10-26 (+7d) | 2026-11-03 → 2026-11-10 (+7d) |  |
| 5 | **Backfilling** | 2026-11-16 → 2026-11-23 (+7d) | 2026-12-09 → 2026-12-16 (+7d) |  |
| SDR-2-CON-TE-ZA-3270 | Backfilling over Telecom Manhole | 2026-11-16 → 2026-11-23 (+7d) | 2026-12-09 → 2026-12-16 (+7d) |  |
| 11 | **TELECOMMUNICATION IN ( PH2-A-MCA0 )** |  | 2027-02-04 → 2027-02-11 (+7d) |  |
| 3 | **Ducts** |  | 2026-12-31 → 2027-01-07 (+7d) |  |
| 2 | **Excavation** |  | 2026-10-12 → 2026-10-19 (+7d) |  |
| SDR-2-CON-TE-ZA-3300 | Excavation for telecom crossing ducts & trenches |  | 2026-10-12 → 2026-10-19 (+7d) |  |
| 5 | **Pipe laying** | 2026-10-13 → 2026-10-20 (+7d) | 2026-11-03 → 2026-11-10 (+7d) |  |
| SDR-2-CON-TE-ZA-3310 | HDPE Pipes for Telecom Installation | 2026-10-13 → 2026-10-20 (+7d) | 2026-11-03 → 2026-11-10 (+7d) |  |
| 6 | **Backfilling** | 2026-11-04 → 2026-11-11 (+7d) | 2026-11-26 → 2026-12-03 (+7d) |  |
| SDR-2-CON-TE-ZA-3320 | Backfilling over HDPE Telecom Pipes | 2026-11-04 → 2026-11-11 (+7d) | 2026-11-26 → 2026-12-03 (+7d) |  |
| 7 | **Pulling Cable** | 2026-12-09 → 2026-12-16 (+7d) | 2026-12-31 → 2027-01-07 (+7d) |  |
| SDR-2-CON-TE-ZA-3370 | Pulling Cable | 2026-12-09 → 2026-12-16 (+7d) | 2026-12-31 → 2027-01-07 (+7d) |  |
| 4 | **Manholes** |  | 2027-02-04 → 2027-02-11 (+7d) |  |
| 1 | **Excavation** |  | 2026-10-22 → 2026-10-29 (+7d) |  |
| SDR-2-CON-TE-ZA-3330 | Excavation for Telecom Manholes |  | 2026-10-22 → 2026-10-29 (+7d) | 14.81d → 8.81d |
| 2 | **Bedding Work** | 2026-10-22 → 2026-10-29 (+7d) | 2026-11-15 → 2026-11-22 (+7d) |  |
| SDR-2-CON-TE-ZA-3380 | Sand bedding for Telecom Manhole | 2026-10-22 → 2026-10-29 (+7d) | 2026-11-15 → 2026-11-22 (+7d) | 14.81d → 8.81d |
| 3 | **Install Manholes** | 2026-11-15 → 2026-11-22 (+7d) | 2026-12-08 → 2026-12-15 (+7d) |  |
| SDR-2-CON-TE-ZA-3340 | Installation of Telecom Manhole | 2026-11-15 → 2026-11-22 (+7d) | 2026-12-08 → 2026-12-15 (+7d) | 14.81d → 8.81d |
| 4 | **Testting** | 2026-12-08 → 2026-12-15 (+7d) | 2026-12-31 → 2027-01-07 (+7d) |  |
| SDR-2-CON-TE-ZA-3350 | Telecom Manhole finishing works | 2026-12-08 → 2026-12-15 (+7d) | 2026-12-31 → 2027-01-07 (+7d) | 14.81d → 8.81d |
| 5 | **Backfilling** | 2027-01-12 → 2027-01-19 (+7d) | 2027-02-04 → 2027-02-11 (+7d) |  |
| SDR-2-CON-TE-ZA-3360 | Backfilling over Telecom Manhole | 2027-01-12 → 2027-01-19 (+7d) | 2027-02-04 → 2027-02-11 (+7d) | 14.81d → 8.81d |
| 12 | **TELECOMMUNICATION IN ( PH2-A-MCB0 )** |  | 2027-02-13 → 2027-02-20 (+7d) |  |
| 3 | **Ducts** |  | 2027-01-04 → 2027-01-11 (+7d) |  |
| 2 | **Excavation** |  | 2026-10-12 → 2026-10-19 (+7d) |  |
| SDR-2-CON-TE-ZA-3390 | Excavation for telecom crossing ducts & trenches |  | 2026-10-12 → 2026-10-19 (+7d) |  |
| 5 | **Pipe laying** | 2026-10-13 → 2026-10-20 (+7d) | 2026-11-05 → 2026-11-12 (+7d) |  |
| SDR-2-CON-TE-ZA-3400 | HDPE Pipes for Telecom Installation | 2026-10-13 → 2026-10-20 (+7d) | 2026-11-05 → 2026-11-12 (+7d) |  |
| 6 | **Backfilling** | 2026-11-07 → 2026-11-14 (+7d) | 2026-11-29 → 2026-12-06 (+7d) |  |
| SDR-2-CON-TE-ZA-3410 | Backfilling over HDPE Telecom Pipes | 2026-11-07 → 2026-11-14 (+7d) | 2026-11-29 → 2026-12-06 (+7d) |  |
| 7 | **Pulling Cable** | 2026-12-12 → 2026-12-19 (+7d) | 2027-01-04 → 2027-01-11 (+7d) |  |
| SDR-2-CON-TE-ZA-3460 | Pulling Cable | 2026-12-12 → 2026-12-19 (+7d) | 2027-01-04 → 2027-01-11 (+7d) |  |
| 4 | **Manholes** |  | 2027-02-13 → 2027-02-20 (+7d) |  |
| 1 | **Excavation** |  | 2026-10-28 → 2026-11-04 (+7d) |  |
| SDR-2-CON-TE-ZA-3420 | Excavation for Telecom Manholes |  | 2026-10-28 → 2026-11-04 (+7d) | 7.81d → 1.81d |
| 2 | **Bedding Work** | 2026-10-28 → 2026-11-04 (+7d) | 2026-11-21 → 2026-11-28 (+7d) |  |
| SDR-2-CON-TE-ZA-3470 | Sand bedding for Telecom Manhole | 2026-10-28 → 2026-11-04 (+7d) | 2026-11-21 → 2026-11-28 (+7d) | 7.81d → 1.81d |
| 3 | **Install Manholes** | 2026-11-21 → 2026-11-28 (+7d) | 2026-12-14 → 2026-12-21 (+7d) |  |
| SDR-2-CON-TE-ZA-3430 | Installation of Telecom Manhole | 2026-11-21 → 2026-11-28 (+7d) | 2026-12-14 → 2026-12-21 (+7d) | 7.81d → 1.81d |
| 4 | **Testting** | 2026-12-14 → 2026-12-21 (+7d) | 2027-01-07 → 2027-01-14 (+7d) |  |
| SDR-2-CON-TE-ZA-3440 | Telecom Manhole finishing works | 2026-12-14 → 2026-12-21 (+7d) | 2027-01-07 → 2027-01-14 (+7d) | 7.81d → 1.81d |
| 5 | **Backfilling** | 2027-01-19 → 2027-01-26 (+7d) | 2027-02-13 → 2027-02-20 (+7d) |  |
| SDR-2-CON-TE-ZA-3450 | Backfilling over Telecom Manhole | 2027-01-19 → 2027-01-26 (+7d) | 2027-02-13 → 2027-02-20 (+7d) | 7.81d → 1.81d |
| 13 | **TELECOMMUNICATION IN ( PH2-A-MCC0 )** |  | 2026-12-26 → 2027-01-02 (+7d) |  |
| 3 | **Ducts** |  | 2026-12-15 → 2026-12-22 (+7d) |  |
| 2 | **Excavation** |  | 2026-10-12 → 2026-10-19 (+7d) |  |
| SDR-2-CON-TE-ZA-3480 | Excavation for telecom crossing ducts & trenches |  | 2026-10-12 → 2026-10-19 (+7d) | 3d → 7d |
| 5 | **Pipe laying** |  | 2026-10-17 → 2026-10-24 (+7d) |  |
| SDR-2-CON-TE-ZA-3490 | HDPE Pipes for Telecom Installation |  | 2026-10-17 → 2026-10-24 (+7d) |  |
| 6 | **Backfilling** | 2026-10-18 → 2026-10-25 (+7d) | 2026-11-09 → 2026-11-16 (+7d) |  |
| SDR-2-CON-TE-ZA-3500 | Backfilling over HDPE Telecom Pipes | 2026-10-18 → 2026-10-25 (+7d) | 2026-11-09 → 2026-11-16 (+7d) |  |
| 7 | **Pulling Cable** | 2026-11-22 → 2026-11-29 (+7d) | 2026-12-15 → 2026-12-22 (+7d) |  |
| SDR-2-CON-TE-ZA-3550 | Pulling Cable | 2026-11-22 → 2026-11-29 (+7d) | 2026-12-15 → 2026-12-22 (+7d) |  |
| 4 | **Manholes** |  | 2026-12-26 → 2027-01-02 (+7d) |  |
| 2 | **Bedding Work** |  | 2026-10-25 → 2026-11-01 (+7d) |  |
| SDR-2-CON-TE-ZA-3560 | Sand bedding for Telecom Manhole |  | 2026-10-25 → 2026-11-01 (+7d) |  |
| 3 | **Install Manholes** |  | 2026-11-16 → 2026-11-23 (+7d) |  |
| SDR-2-CON-TE-ZA-3520 | Installation of Telecom Manhole |  | 2026-11-16 → 2026-11-23 (+7d) |  |
| 4 | **Testting** | 2026-11-16 → 2026-11-23 (+7d) | 2026-12-02 → 2026-12-09 (+7d) |  |
| SDR-2-CON-TE-ZA-3530 | Telecom Manhole finishing works | 2026-11-16 → 2026-11-23 (+7d) | 2026-12-02 → 2026-12-09 (+7d) |  |
| 5 | **Backfilling** | 2026-12-02 → 2026-12-09 (+7d) | 2026-12-26 → 2027-01-02 (+7d) |  |
| SDR-2-CON-TE-ZA-3540 | Backfilling over Telecom Manhole | 2026-12-02 → 2026-12-09 (+7d) | 2026-12-26 → 2027-01-02 (+7d) |  |
| 14 | **TELECOMMUNICATION IN ( PH2-A-MCD0 )** |  | 2027-01-05 → 2027-01-12 (+7d) |  |
| 3 | **Ducts** |  | 2026-12-01 → 2026-12-08 (+7d) |  |
| 2 | **Excavation** |  | 2026-10-12 → 2026-10-19 (+7d) |  |

| ID | Task | Start | Finish | Total float |
| --- | --- | --- | --- | --- |
| SDR-2-CON-TE-ZA-3570 | Excavation for telecom crossing ducts & trenches |  | 2026-10-12 → 2026-10-19 (+7d) | 3d → 7d |
| 5 | **Pipe laying** |  | 2026-10-17 → 2026-10-24 (+7d) |  |
| SDR-2-CON-TE-ZA-3580 | HDPE Pipes for Telecom Installation |  | 2026-10-17 → 2026-10-24 (+7d) | 117d → 111d |
| 6 | **Backfilling** | 2026-10-18 → 2026-10-25 (+7d) | 2026-11-07 → 2026-11-14 (+7d) |  |
| SDR-2-CON-TE-ZA-3590 | Backfilling over HDPE Telecom Pipes | 2026-10-18 → 2026-10-25 (+7d) | 2026-11-07 → 2026-11-14 (+7d) | 117d → 111d |
| 7 | **Pulling Cable** | 2026-11-08 → 2026-11-15 (+7d) | 2026-12-01 → 2026-12-08 (+7d) |  |
| SDR-2-CON-TE-ZA-3640 | Pulling Cable | 2026-11-08 → 2026-11-15 (+7d) | 2026-12-01 → 2026-12-08 (+7d) | 117d → 111d |
| 4 | **Manholes** |  | 2027-01-05 → 2027-01-12 (+7d) |  |
| 2 | **Bedding Work** |  | 2026-10-29 → 2026-11-05 (+7d) |  |
| SDR-2-CON-TE-ZA-3650 | Sand bedding for Telecom Manhole |  | 2026-10-29 → 2026-11-05 (+7d) | 37.81d → 36.81d |
| 3 | **Install Manholes** |  | 2026-11-23 → 2026-11-30 (+7d) |  |
| SDR-2-CON-TE-ZA-3610 | Installation of Telecom Manhole |  | 2026-11-23 → 2026-11-30 (+7d) | 37.81d → 36.81d |
| 4 | **Testting** | 2026-11-29 → 2026-12-06 (+7d) | 2026-12-12 → 2026-12-19 (+7d) |  |
| SDR-2-CON-TE-ZA-3620 | Telecom Manhole finishing works | 2026-11-29 → 2026-12-06 (+7d) | 2026-12-12 → 2026-12-19 (+7d) | 33d → 32d |
| 5 | **Backfilling** | 2026-12-13 → 2026-12-20 (+7d) | 2027-01-05 → 2027-01-12 (+7d) |  |
| SDR-2-CON-TE-ZA-3630 | Backfilling over Telecom Manhole | 2026-12-13 → 2026-12-20 (+7d) | 2027-01-05 → 2027-01-12 (+7d) | 33d → 32d |
| 5 | **TELECOMMUNICATION IN ( PH2-A-MCE0 )** |  | 2027-01-27 → 2027-02-03 (+7d) |  |
| 3 | **Ducts** |  | 2026-11-30 → 2026-12-07 (+7d) |  |
| 2 | **Excavation** |  | 2026-10-12 → 2026-10-19 (+7d) |  |
| SDR-2-CON-TE-ZA-3660 | Excavation for telecom crossing ducts & trenches |  | 2026-10-12 → 2026-10-19 (+7d) | 3d → 7d |
| 5 | **Pipe laying** |  | 2026-10-12 → 2026-10-19 (+7d) |  |
| SDR-2-CON-TE-ZA-3670 | HDPE Pipes for Telecom Installation |  | 2026-10-12 → 2026-10-19 (+7d) | 118d → 112d |
| 6 | **Backfilling** | 2026-10-13 → 2026-10-20 (+7d) | 2026-11-05 → 2026-11-12 (+7d) |  |
| SDR-2-CON-TE-ZA-3680 | Backfilling over HDPE Telecom Pipes | 2026-10-13 → 2026-10-20 (+7d) | 2026-11-05 → 2026-11-12 (+7d) | 118d → 112d |
| 7 | **Pulling Cable** | 2026-11-07 → 2026-11-14 (+7d) | 2026-11-30 → 2026-12-07 (+7d) |  |
| SDR-2-CON-TE-ZA-3730 | Pulling Cable | 2026-11-07 → 2026-11-14 (+7d) | 2026-11-30 → 2026-12-07 (+7d) | 118d → 112d |
| 4 | **Manholes** | 2026-10-12 → 2026-10-19 (+7d) | 2027-01-27 → 2027-02-03 (+7d) |  |
| 1 | **Excavation** | 2026-10-12 → 2026-10-19 (+7d) | 2026-11-04 → 2026-11-11 (+7d) |  |
| SDR-2-CON-TE-ZA-3690 | Excavation for Telecom Manholes | 2026-10-12 → 2026-10-19 (+7d) | 2026-11-04 → 2026-11-11 (+7d) | 4d → 8d |
| 2 | **Bedding Work** | 2026-11-05 → 2026-11-12 (+7d) | 2026-11-28 → 2026-12-05 (+7d) |  |
| SDR-2-CON-TE-ZA-3740 | Sand bedding for Telecom Manhole | 2026-11-05 → 2026-11-12 (+7d) | 2026-11-28 → 2026-12-05 (+7d) | 4d → 8d |
| 3 | **Install Manholes** | 2026-11-29 → 2026-12-06 (+7d) | 2026-12-21 → 2026-12-28 (+7d) |  |
| SDR-2-CON-TE-ZA-3700 | Installation of Telecom Manhole | 2026-11-29 → 2026-12-06 (+7d) | 2026-12-21 → 2026-12-28 (+7d) | 4d → 8d |
| 4 | **Testting** | 2026-12-22 → 2026-12-29 (+7d) | 2027-01-04 → 2027-01-11 (+7d) |  |
| SDR-2-CON-TE-ZA-3710 | Telecom Manhole finishing works | 2026-12-22 → 2026-12-29 (+7d) | 2027-01-04 → 2027-01-11 (+7d) | 4d → 8d |
| 5 | **Backfilling** | 2027-01-05 → 2027-01-12 (+7d) | 2027-01-27 → 2027-02-03 (+7d) |  |
| SDR-2-CON-TE-ZA-3720 | Backfilling over Telecom Manhole | 2027-01-05 → 2027-01-12 (+7d) | 2027-01-27 → 2027-02-03 (+7d) | 4d → 8d |
| 6 | **TELECOMMUNICATION IN ( PH2-A-MCF0 )** |  | 2027-01-28 → 2027-02-04 (+7d) |  |
| 3 | **Ducts** |  | 2026-11-29 → 2026-12-06 (+7d) |  |
| 2 | **Excavation** |  | 2026-10-12 → 2026-10-19 (+7d) |  |
| SDR-2-CON-TE-ZA-3750 | Excavation for telecom crossing ducts & trenches |  | 2026-10-12 → 2026-10-19 (+7d) | 3d → 7d |
| 5 | **Pipe laying** |  | 2026-10-12 → 2026-10-19 (+7d) |  |
| SDR-2-CON-TE-ZA-3760 | HDPE Pipes for Telecom Installation |  | 2026-10-12 → 2026-10-19 (+7d) | 55d → 59d |
| 6 | **Backfilling** | 2026-10-13 → 2026-10-20 (+7d) | 2026-11-05 → 2026-11-12 (+7d) |  |
| SDR-2-CON-TE-ZA-3770 | Backfilling over HDPE Telecom Pipes | 2026-10-13 → 2026-10-20 (+7d) | 2026-11-05 → 2026-11-12 (+7d) | 55d → 59d |
| 7 | **Pulling Cable** | 2026-11-07 → 2026-11-14 (+7d) | 2026-11-29 → 2026-12-06 (+7d) |  |
| SDR-2-CON-TE-ZA-3820 | Pulling Cable | 2026-11-07 → 2026-11-14 (+7d) | 2026-11-29 → 2026-12-06 (+7d) | 55d → 59d |
| 4 | **Manholes** | 2026-10-12 → 2026-10-19 (+7d) | 2027-01-28 → 2027-02-04 (+7d) |  |
| 1 | **Excavation** | 2026-10-12 → 2026-10-19 (+7d) | 2026-11-04 → 2026-11-11 (+7d) |  |
| SDR-2-CON-TE-ZA-3780 | Excavation for Telecom Manholes | 2026-10-12 → 2026-10-19 (+7d) | 2026-11-04 → 2026-11-11 (+7d) | 3d → 7d |
| 2 | **Bedding Work** | 2026-11-05 → 2026-11-12 (+7d) | 2026-11-28 → 2026-12-05 (+7d) |  |
| SDR-2-CON-TE-ZA-3830 | Sand bedding for Telecom Manhole | 2026-11-05 → 2026-11-12 (+7d) | 2026-11-28 → 2026-12-05 (+7d) | 3d → 7d |
| 3 | **Install Manholes** | 2026-11-29 → 2026-12-06 (+7d) | 2026-12-21 → 2026-12-28 (+7d) |  |
| SDR-2-CON-TE-ZA-3790 | Installation of Telecom Manhole | 2026-11-29 → 2026-12-06 (+7d) | 2026-12-21 → 2026-12-28 (+7d) | 3d → 7d |
| 4 | **Testting** | 2026-12-22 → 2026-12-29 (+7d) | 2027-01-04 → 2027-01-11 (+7d) |  |
| SDR-2-CON-TE-ZA-3800 | Telecom Manhole finishing works | 2026-12-22 → 2026-12-29 (+7d) | 2027-01-04 → 2027-01-11 (+7d) | 3d → 7d |
| 5 | **Backfilling** | 2027-01-05 → 2027-01-12 (+7d) | 2027-01-28 → 2027-02-04 (+7d) |  |
| SDR-2-CON-TE-ZA-3810 | Backfilling over Telecom Manhole | 2027-01-05 → 2027-01-12 (+7d) | 2027-01-28 → 2027-02-04 (+7d) | 3d → 7d |
| 7 | **TELECOMMUNICATION IN ( PH2-A-MCG0 )** |  | 2027-01-27 → 2027-02-03 (+7d) |  |
| 3 | **Ducts** |  | 2026-12-09 → 2026-12-16 (+7d) |  |
| 2 | **Excavation** |  | 2026-10-12 → 2026-10-19 (+7d) |  |
| SDR-2-CON-TE-ZA-3840 | Excavation for telecom crossing ducts & trenches |  | 2026-10-12 → 2026-10-19 (+7d) | 4d → 8d |
| 5 | **Pipe laying** |  | 2026-10-12 → 2026-10-19 (+7d) |  |
| SDR-2-CON-TE-ZA-3850 | HDPE Pipes for Telecom Installation |  | 2026-10-12 → 2026-10-19 (+7d) | 46d → 50d |
| 6 | **Backfilling** | 2026-10-13 → 2026-10-20 (+7d) | 2026-11-04 → 2026-11-11 (+7d) |  |
| SDR-2-CON-TE-ZA-3860 | Backfilling over HDPE Telecom Pipes | 2026-10-13 → 2026-10-20 (+7d) | 2026-11-04 → 2026-11-11 (+7d) | 46d → 50d |
| 7 | **Pulling Cable** | 2026-11-16 → 2026-11-23 (+7d) | 2026-12-09 → 2026-12-16 (+7d) |  |
| SDR-2-CON-TE-ZA-3910 | Pulling Cable | 2026-11-16 → 2026-11-23 (+7d) | 2026-12-09 → 2026-12-16 (+7d) | 46d → 50d |
| 4 | **Manholes** | 2026-10-12 → 2026-10-19 (+7d) | 2027-01-27 → 2027-02-03 (+7d) |  |
| 1 | **Excavation** | 2026-10-12 → 2026-10-19 (+7d) | 2026-11-04 → 2026-11-11 (+7d) |  |

| ID | Task | Start | Finish | Total float |
| --- | --- | --- | --- | --- |
| SDR-2-CON-TE-ZA-3870 | Excavation for Telecom Manholes | 2026-10-12 → 2026-10-19 (+7d) | 2026-11-04 → 2026-11-11 (+7d) | 4d → 8d |
| 2 | **Bedding Work** | 2026-11-05 → 2026-11-12 (+7d) | 2026-11-28 → 2026-12-05 (+7d) |  |
| SDR-2-CON-TE-ZA-3920 | Sand bedding for Telecom Manhole | 2026-11-05 → 2026-11-12 (+7d) | 2026-11-28 → 2026-12-05 (+7d) | 4d → 8d |
| 3 | **Install Manholes** | 2026-11-29 → 2026-12-06 (+7d) | 2026-12-21 → 2026-12-28 (+7d) |  |
| SDR-2-CON-TE-ZA-3880 | Installation of Telecom Manhole | 2026-11-29 → 2026-12-06 (+7d) | 2026-12-21 → 2026-12-28 (+7d) | 4d → 8d |
| 4 | **Testting** | 2026-12-22 → 2026-12-29 (+7d) | 2027-01-04 → 2027-01-11 (+7d) |  |
| SDR-2-CON-TE-ZA-3890 | Telecom Manhole finishing works | 2026-12-22 → 2026-12-29 (+7d) | 2027-01-04 → 2027-01-11 (+7d) | 4d → 8d |
| 5 | **Backfilling** | 2027-01-05 → 2027-01-12 (+7d) | 2027-01-27 → 2027-02-03 (+7d) |  |
| SDR-2-CON-TE-ZA-3900 | Backfilling over Telecom Manhole | 2027-01-05 → 2027-01-12 (+7d) | 2027-01-27 → 2027-02-03 (+7d) | 4d → 8d |
| 8 | **TELECOMMUNICATION IN ( PH2-A-MCH0 )** |  | 2027-01-25 → 2027-02-01 (+7d) |  |
| 3 | **Ducts** |  | 2026-12-22 → 2026-12-29 (+7d) |  |
| 2 | **Excavation** |  | 2026-10-12 → 2026-10-19 (+7d) |  |
| SDR-2-CON-TE-ZA-3930 | Excavation for telecom crossing ducts & trenches |  | 2026-10-12 → 2026-10-19 (+7d) | 6d → 10d |
| 5 | **Pipe laying** | 2026-10-13 → 2026-10-20 (+7d) | 2026-11-04 → 2026-11-11 (+7d) |  |
| SDR-2-CON-TE-ZA-3940 | HDPE Pipes for Telecom Installation | 2026-10-13 → 2026-10-20 (+7d) | 2026-11-04 → 2026-11-11 (+7d) | 35d → 39d |
| 6 | **Backfilling** | 2026-11-05 → 2026-11-12 (+7d) | 2026-11-28 → 2026-12-05 (+7d) |  |
| SDR-2-CON-TE-ZA-3950 | Backfilling over HDPE Telecom Pipes | 2026-11-05 → 2026-11-12 (+7d) | 2026-11-28 → 2026-12-05 (+7d) | 35d → 39d |
| 7 | **Pulling Cable** | 2026-11-29 → 2026-12-06 (+7d) | 2026-12-22 → 2026-12-29 (+7d) |  |
| SDR-2-CON-TE-ZA-4000 | Pulling Cable | 2026-11-29 → 2026-12-06 (+7d) | 2026-12-22 → 2026-12-29 (+7d) | 35d → 39d |
| 4 | **Manholes** | 2026-10-12 → 2026-10-19 (+7d) | 2027-01-25 → 2027-02-01 (+7d) |  |
| 1 | **Excavation** | 2026-10-12 → 2026-10-19 (+7d) | 2026-11-04 → 2026-11-11 (+7d) |  |
| SDR-2-CON-TE-ZA-3960 | Excavation for Telecom Manholes | 2026-10-12 → 2026-10-19 (+7d) | 2026-11-04 → 2026-11-11 (+7d) | 6d → 10d |
| 2 | **Bedding Work** | 2026-11-05 → 2026-11-12 (+7d) | 2026-11-28 → 2026-12-05 (+7d) |  |
| SDR-2-CON-TE-ZA-4010 | Sand bedding for Telecom Manhole | 2026-11-05 → 2026-11-12 (+7d) | 2026-11-28 → 2026-12-05 (+7d) | 6d → 10d |
| 3 | **Install Manholes** | 2026-11-29 → 2026-12-06 (+7d) | 2026-12-21 → 2026-12-28 (+7d) |  |
| SDR-2-CON-TE-ZA-3970 | Installation of Telecom Manhole | 2026-11-29 → 2026-12-06 (+7d) | 2026-12-21 → 2026-12-28 (+7d) | 6d → 10d |
| 4 | **Testting** | 2026-12-22 → 2026-12-29 (+7d) | 2027-01-04 → 2027-01-11 (+7d) |  |
| SDR-2-CON-TE-ZA-3980 | Telecom Manhole finishing works | 2026-12-22 → 2026-12-29 (+7d) | 2027-01-04 → 2027-01-11 (+7d) | 6d → 10d |
| 5 | **Backfilling** | 2027-01-05 → 2027-01-12 (+7d) | 2027-01-25 → 2027-02-01 (+7d) |  |
| SDR-2-CON-TE-ZA-3990 | Backfilling over Telecom Manhole | 2027-01-05 → 2027-01-12 (+7d) | 2027-01-25 → 2027-02-01 (+7d) | 6d → 10d |
| 9 | **TELECOMMUNICATION IN ( PH2-ART-MC00 )** |  | 2027-01-25 → 2027-02-01 (+7d) |  |
| 3 | **Ducts** |  | 2026-12-21 → 2026-12-28 (+7d) |  |
| 2 | **Excavation** |  | 2026-10-12 → 2026-10-19 (+7d) |  |
| SDR-2-CON-TE-ZA-4020 | Excavation for telecom crossing ducts & trenches |  | 2026-10-12 → 2026-10-19 (+7d) | 6d → 10d |
| 5 | **Pipe laying** | 2026-10-13 → 2026-10-20 (+7d) | 2026-11-04 → 2026-11-11 (+7d) |  |
| SDR-2-CON-TE-ZA-4030 | HDPE Pipes for Telecom Installation | 2026-10-13 → 2026-10-20 (+7d) | 2026-11-04 → 2026-11-11 (+7d) | 36d → 40d |
| 6 | **Backfilling** | 2026-11-05 → 2026-11-12 (+7d) | 2026-11-26 → 2026-12-03 (+7d) |  |
| SDR-2-CON-TE-ZA-4040 | Backfilling over HDPE Telecom Pipes | 2026-11-05 → 2026-11-12 (+7d) | 2026-11-26 → 2026-12-03 (+7d) | 36d → 40d |
| 7 | **Pulling Cable** | 2026-11-28 → 2026-12-05 (+7d) | 2026-12-21 → 2026-12-28 (+7d) |  |
| SDR-2-CON-TE-ZA-4090 | Pulling Cable | 2026-11-28 → 2026-12-05 (+7d) | 2026-12-21 → 2026-12-28 (+7d) | 36d → 40d |
| 4 | **Manholes** | 2026-10-12 → 2026-10-19 (+7d) | 2027-01-25 → 2027-02-01 (+7d) |  |
| 1 | **Excavation** | 2026-10-12 → 2026-10-19 (+7d) | 2026-11-04 → 2026-11-11 (+7d) |  |
| SDR-2-CON-TE-ZA-4050 | Excavation for Telecom Manholes | 2026-10-12 → 2026-10-19 (+7d) | 2026-11-04 → 2026-11-11 (+7d) | 6d → 10d |
| 2 | **Bedding Work** | 2026-11-05 → 2026-11-12 (+7d) | 2026-11-28 → 2026-12-05 (+7d) |  |
| SDR-2-CON-TE-ZA-4100 | Sand bedding for Telecom Manhole | 2026-11-05 → 2026-11-12 (+7d) | 2026-11-28 → 2026-12-05 (+7d) | 6d → 10d |
| 3 | **Install Manholes** | 2026-11-29 → 2026-12-06 (+7d) | 2026-12-21 → 2026-12-28 (+7d) |  |
| SDR-2-CON-TE-ZA-4060 | Installation of Telecom Manhole | 2026-11-29 → 2026-12-06 (+7d) | 2026-12-21 → 2026-12-28 (+7d) | 6d → 10d |
| 4 | **Testting** | 2026-12-22 → 2026-12-29 (+7d) | 2027-01-04 → 2027-01-11 (+7d) |  |
| SDR-2-CON-TE-ZA-4070 | Telecom Manhole finishing works | 2026-12-22 → 2026-12-29 (+7d) | 2027-01-04 → 2027-01-11 (+7d) | 6d → 10d |
| 5 | **Backfilling** | 2027-01-05 → 2027-01-12 (+7d) | 2027-01-25 → 2027-02-01 (+7d) |  |
| SDR-2-CON-TE-ZA-4080 | Backfilling over Telecom Manhole | 2027-01-05 → 2027-01-12 (+7d) | 2027-01-25 → 2027-02-01 (+7d) | 6d → 10d |
| 10 | **TELECOMMUNICATION IN ( PH2-ART-MC10 )** |  | 2026-12-05 → 2026-12-12 (+7d) |  |
| 3 | **Ducts** |  | 2026-11-29 → 2026-12-06 (+7d) |  |
| 2 | **Excavation** |  | 2026-10-12 → 2026-10-19 (+7d) |  |
| SDR-2-CON-TE-ZA-4110 | Excavation for telecom crossing ducts & trenches |  | 2026-10-12 → 2026-10-19 (+7d) | 55d → 59d |
| 5 | **Pipe laying** |  | 2026-10-12 → 2026-10-19 (+7d) |  |
| SDR-2-CON-TE-ZA-4120 | HDPE Pipes for Telecom Installation |  | 2026-10-12 → 2026-10-19 (+7d) | 55d → 59d |
| 6 | **Backfilling** | 2026-10-13 → 2026-10-20 (+7d) | 2026-11-04 → 2026-11-11 (+7d) |  |
| SDR-2-CON-TE-ZA-4130 | Backfilling over HDPE Telecom Pipes | 2026-10-13 → 2026-10-20 (+7d) | 2026-11-04 → 2026-11-11 (+7d) | 55d → 59d |
| 7 | **Pulling Cable** | 2026-11-05 → 2026-11-12 (+7d) | 2026-11-29 → 2026-12-06 (+7d) |  |
| SDR-2-CON-TE-ZA-4180 | Pulling Cable | 2026-11-05 → 2026-11-12 (+7d) | 2026-11-29 → 2026-12-06 (+7d) | 55d → 59d |
| 4 | **Manholes** |  | 2026-12-05 → 2026-12-12 (+7d) |  |
| 2 | **Bedding Work** |  | 2026-10-28 → 2026-11-04 (+7d) |  |
| SDR-2-CON-TE-ZA-4190 | Sand bedding for Telecom Manhole |  | 2026-10-28 → 2026-11-04 (+7d) | 50.46d → 54.46d |
| 3 | **Install Manholes** |  | 2026-10-28 → 2026-11-04 (+7d) |  |
| SDR-2-CON-TE-ZA-4150 | Installation of Telecom Manhole |  | 2026-10-28 → 2026-11-04 (+7d) | 50.46d → 54.46d |
| 4 | **Testting** | 2026-10-28 → 2026-11-04 (+7d) | 2026-11-10 → 2026-11-17 (+7d) |  |
| SDR-2-CON-TE-ZA-4160 | Telecom Manhole finishing works | 2026-10-28 → 2026-11-04 (+7d) | 2026-11-10 → 2026-11-17 (+7d) | 50.46d → 54.46d |
| 5 | **Backfilling** | 2026-11-10 → 2026-11-17 (+7d) | 2026-12-05 → 2026-12-12 (+7d) |  |
| SDR-2-CON-TE-ZA-4170 | Backfilling over Telecom Manhole | 2026-11-10 → 2026-11-17 (+7d) | 2026-12-05 → 2026-12-12 (+7d) | 50.46d → 54.46d |

| ID | Task | Start | Finish | Total float |
| --- | --- | --- | --- | --- |
| ZG | **ZONE G** |  | 2027-03-03 → 2027-03-15 (+12d) |  |
| 1 | **Street Lighting Network** |  | 2027-03-03 → 2027-03-15 (+12d) |  |
| 5 | **Street Lighting IN ( PH2-G-MCA0 )** |  | 2026-12-07 → 2026-12-14 (+7d) |  |
| 10 | **Excavation** |  | 2026-10-12 → 2026-10-19 (+7d) |  |
| SDR-2-CON-SL-ZA-3230 | Excavation for LV Cable drawpits & trenches |  | 2026-10-12 → 2026-10-19 (+7d) | 48d → 56d |
| 11 | **Install Footings** |  | 2026-10-12 → 2026-10-19 (+7d) |  |
| SDR-2-CON-SL-ZA-3240 | Install Footings |  | 2026-10-12 → 2026-10-19 (+7d) | 58d → 56d |
| 12 | **Backfilling** | 2026-10-13 → 2026-10-20 (+7d) | 2026-11-04 → 2026-11-11 (+7d) |  |
| SDR-2-CON-SL-ZA-3260 | Backfilling over LV Cables of Street lighting | 2026-10-13 → 2026-10-20 (+7d) | 2026-11-04 → 2026-11-11 (+7d) | 58d → 56d |
| 13 | **Install pole** | 2026-11-14 → 2026-11-21 (+7d) | 2026-12-07 → 2026-12-14 (+7d) |  |
| SDR-2-CON-SL-ZA-3250 | Install Pole | 2026-11-14 → 2026-11-21 (+7d) | 2026-12-07 → 2026-12-14 (+7d) | 58d → 56d |
| 6 | **Street Lighting IN ( PH2-G-MCE0 )** |  | 2026-12-22 → 2026-12-29 (+7d) |  |
| 10 | **Excavation** |  | 2026-10-12 → 2026-10-19 (+7d) |  |
| SDR-2-CON-SL-ZA-3270 | Excavation for LV Cable drawpits & trenches |  | 2026-10-12 → 2026-10-19 (+7d) | 34d → 33d |
| 11 | **Install Footings** |  | 2026-10-12 → 2026-10-19 (+7d) |  |
| SDR-2-CON-SL-ZA-3280 | Install Footings |  | 2026-10-12 → 2026-10-19 (+7d) | 34d → 33d |
| 12 | **Backfilling** | 2026-10-13 → 2026-10-20 (+7d) | 2026-11-04 → 2026-11-11 (+7d) |  |
| SDR-2-CON-SL-ZA-3300 | Backfilling over LV Cables of Street lighting | 2026-10-13 → 2026-10-20 (+7d) | 2026-11-04 → 2026-11-11 (+7d) | 34d → 33d |
| 13 | **Install pole** | 2026-11-29 → 2026-12-06 (+7d) | 2026-12-22 → 2026-12-29 (+7d) |  |
| SDR-2-CON-SL-ZA-3290 | Install Pole | 2026-11-29 → 2026-12-06 (+7d) | 2026-12-22 → 2026-12-29 (+7d) | 24d → 23d |
| 7 | **Street Lighting IN ( PH2-G-MCF0 )** |  | 2026-12-10 → 2026-12-17 (+7d) |  |
| 10 | **Excavation** |  | 2026-10-12 → 2026-10-19 (+7d) |  |
| SDR-2-CON-SL-ZA-3310 | Excavation for LV Cable drawpits & trenches |  | 2026-10-12 → 2026-10-19 (+7d) | 48d → 56d |
| 11 | **Install Footings** |  | 2026-10-12 → 2026-10-19 (+7d) |  |
| SDR-2-CON-SL-ZA-3320 | Install Footings |  | 2026-10-12 → 2026-10-19 (+7d) | 90d → 84d |
| 12 | **Backfilling** | 2026-10-13 → 2026-10-20 (+7d) | 2026-11-04 → 2026-11-11 (+7d) |  |
| SDR-2-CON-SL-ZA-3340 | Backfilling over LV Cables of Street lighting | 2026-10-13 → 2026-10-20 (+7d) | 2026-11-04 → 2026-11-11 (+7d) | 90d → 84d |
| 13 | **Install pole** | 2026-11-17 → 2026-11-24 (+7d) | 2026-12-10 → 2026-12-17 (+7d) |  |
| SDR-2-CON-SL-ZA-3330 | Install Pole | 2026-11-17 → 2026-11-24 (+7d) | 2026-12-10 → 2026-12-17 (+7d) | 90d → 84d |
| 4 | **Street Lighting IN ( PH2-G-MCG0 )** |  | 2026-12-10 → 2026-12-17 (+7d) |  |
| 10 | **Excavation** |  | 2026-10-12 → 2026-10-19 (+7d) |  |
| SDR-2-CON-SL-ZA-3350 | Excavation for LV Cable drawpits & trenches |  | 2026-10-12 → 2026-10-19 (+7d) | 48d → 56d |
| 11 | **Install Footings** |  | 2026-10-12 → 2026-10-19 (+7d) |  |
| SDR-2-CON-SL-ZA-3360 | Install Footings |  | 2026-10-12 → 2026-10-19 (+7d) | 90d → 84d |
| 12 | **Backfilling** |  | 2026-11-04 → 2026-11-11 (+7d) |  |
| SDR-2-CON-SL-ZA-3380 | Backfilling over LV Cables of Street lighting |  | 2026-11-04 → 2026-11-11 (+7d) | 90d → 84d |
| 13 | **Install pole** | 2026-11-17 → 2026-11-24 (+7d) | 2026-12-10 → 2026-12-17 (+7d) |  |
| SDR-2-CON-SL-ZA-3370 | Install Pole | 2026-11-17 → 2026-11-24 (+7d) | 2026-12-10 → 2026-12-17 (+7d) | 90d → 84d |
| 1 | **Street Lighting IN ( PH2-G-MCZ0 )** |  | 2026-10-12 → 2026-10-19 (+7d) |  |
| 10 | **Excavation** |  | 2026-10-12 → 2026-10-19 (+7d) |  |
| SDR-2-CON-SL-ZA-3390 | Excavation for LV Cable drawpits & trenches |  | 2026-10-12 → 2026-10-19 (+7d) | 48d → 56d |
| 11 | **Install Footings** |  | 2026-10-12 → 2026-10-19 (+7d) |  |
| SDR-2-CON-SL-ZA-3400 | Install Footings |  | 2026-10-12 → 2026-10-19 (+7d) | 117d → 125d |
| 12 | **Backfilling** |  | 2026-10-12 → 2026-10-19 (+7d) |  |
| SDR-2-CON-SL-ZA-3420 | Backfilling over LV Cables of Street lighting |  | 2026-10-12 → 2026-10-19 (+7d) | 117d → 125d |
| 13 | **Install pole** |  | 2026-10-12 → 2026-10-19 (+7d) |  |
| SDR-2-CON-SL-ZA-3410 | Install Pole |  | 2026-10-12 → 2026-10-19 (+7d) | 117d → 125d |
| 10 | **Lighting Pole Panels** | 2026-10-12 → 2026-10-19 (+7d) | 2027-01-13 → 2027-01-20 (+7d) |  |
| 1 | **Excavation** | 2026-10-12 → 2026-10-19 (+7d) | 2026-11-04 → 2026-11-11 (+7d) |  |
| SDR-2-CON-SL-ZA-3430 | Street Lighting Panels Excavation | 2026-10-12 → 2026-10-19 (+7d) | 2026-11-04 → 2026-11-11 (+7d) | 48d → 56d |
| 2 | **Install Footings** | 2026-11-05 → 2026-11-12 (+7d) | 2026-11-26 → 2026-12-03 (+7d) |  |
| SDR-2-CON-SL-ZA-3440 | Installation Footings Street Lighting Panels | 2026-11-05 → 2026-11-12 (+7d) | 2026-11-26 → 2026-12-03 (+7d) | 80d → 74d |
| 3 | **Backfilling** | 2026-11-28 → 2026-12-05 (+7d) | 2026-12-20 → 2026-12-27 (+7d) |  |
| SDR-2-CON-SL-ZA-3450 | Street Lighting Panels Backfilling | 2026-11-28 → 2026-12-05 (+7d) | 2026-12-20 → 2026-12-27 (+7d) | 80d → 74d |
| 4 | **Install pole** | 2026-12-21 → 2026-12-28 (+7d) | 2027-01-13 → 2027-01-20 (+7d) |  |
| SDR-2-CON-SL-ZA-3460 | Street Lighting Panels Installation | 2026-12-21 → 2026-12-28 (+7d) | 2027-01-13 → 2027-01-20 (+7d) | 80d → 74d |
| 11 | **Ring Main Unit** | 2026-11-05 → 2026-11-12 (+7d) | 2027-01-09 → 2027-01-16 (+7d) |  |
| 1 | **Leveling** | 2026-11-05 → 2026-11-12 (+7d) | 2026-11-28 → 2026-12-05 (+7d) |  |
| SDR-2-CON-SL-ZA-3470 | Ring Main Unit leveling | 2026-11-05 → 2026-11-12 (+7d) | 2026-11-28 → 2026-12-05 (+7d) | 48d → 56d |
| 2 | **Lean Concrete** | 2026-11-29 → 2026-12-06 (+7d) | 2026-12-16 → 2026-12-23 (+7d) |  |
| SDR-2-CON-SL-ZA-3480 | Ring Main Unit Lean Concrete | 2026-11-29 → 2026-12-06 (+7d) | 2026-12-16 → 2026-12-23 (+7d) | 48d → 56d |
| 3 | **Installation** | 2026-12-17 → 2026-12-24 (+7d) | 2027-01-09 → 2027-01-16 (+7d) |  |
| SDR-2-CON-SL-ZA-3490 | Ring Main Unit installation for Street Lighting | 2026-12-17 → 2026-12-24 (+7d) | 2027-01-09 → 2027-01-16 (+7d) | 48d → 56d |
| 12 | **Feeder Pillars** | 2026-11-08 → 2026-10-31 (-8d) | 2027-01-16 → 2027-01-07 (-9d) |  |
| 1 | **Leveling** | 2026-11-08 → 2026-10-31 (-8d) | 2026-11-30 → 2026-11-22 (-8d) |  |
| SDR-2-CON-SL-ZA-3500 | Feeder Pillars Leveling | 2026-11-08 → 2026-10-31 (-8d) | 2026-11-30 → 2026-11-22 (-8d) | 35d → 42d |
| 2 | **Lean Concrete** | 2026-12-01 → 2026-11-23 (-8d) | 2026-12-23 → 2026-12-15 (-8d) |  |
| SDR-2-CON-SL-ZA-3510 | Feeder Pillars Lean Concrete | 2026-12-01 → 2026-11-23 (-8d) | 2026-12-23 → 2026-12-15 (-8d) | 35d → 42d |
| 3 | **Installation** | 2026-12-24 → 2026-12-16 (-8d) | 2027-01-16 → 2027-01-07 (-9d) |  |
| SDR-2-CON-SL-ZA-3520 | Feeder Pillars Installation | 2026-12-24 → 2026-12-16 (-8d) | 2027-01-16 → 2027-01-07 (-9d) | 35d → 42d |

| ID | Task | Start | Finish | Total float |
| --- | --- | --- | --- | --- |
| 13 | **KWH Frame** | 2026-12-12 → 2026-12-19 (+7d) | 2027-02-18 → 2027-02-27 (+9d) |  |
| 1 | **Leveling** | 2026-12-12 → 2026-12-19 (+7d) | 2027-01-03 → 2027-01-10 (+7d) |  |
| SDR-2-CON-SL-ZA-3530 | KWH meter mounting frame Leveling | 2026-12-12 → 2026-12-19 (+7d) | 2027-01-03 → 2027-01-10 (+7d) | 12d → 10d |
| 2 | **Lean Concrete** | 2027-01-04 → 2027-01-11 (+7d) | 2027-01-26 → 2027-02-02 (+7d) |  |
| SDR-2-CON-SL-ZA-3540 | KWH meter mounting frame Lean Concrete | 2027-01-04 → 2027-01-11 (+7d) | 2027-01-26 → 2027-02-02 (+7d) | 12d → 10d |
| 3 | **Installation** | 2027-01-27 → 2027-02-03 (+7d) | 2027-02-18 → 2027-02-27 (+9d) |  |
| SDR-2-CON-SL-ZA-3550 | KWH meter mounting frame installation | 2027-01-27 → 2027-02-03 (+7d) | 2027-02-18 → 2027-02-27 (+9d) | 12d → 10d |
| 14 | **Street Lighting Sub-station** | 2026-12-13 → 2026-12-20 (+7d) | 2027-03-03 → 2027-03-15 (+12d) |  |
| 1 | **Leveling** | 2026-12-13 → 2026-12-20 (+7d) | 2027-01-04 → 2027-01-11 (+7d) |  |
| SDR-2-CON-SL-ZA-3560 | Unit Substation Leveling | 2026-12-13 → 2026-12-20 (+7d) | 2027-01-04 → 2027-01-11 (+7d) | 2d → 33d |
| 2 | **Lean Concrete** | 2027-01-05 → 2027-01-12 (+7d) | 2027-01-26 → 2027-02-02 (+7d) |  |
| SDR-2-CON-SL-ZA-3570 | Unit Substation Lean Concrete | 2027-01-05 → 2027-01-12 (+7d) | 2027-01-26 → 2027-02-02 (+7d) | 2d → 33d |
| 3 | **Installation** | 2027-02-08 → 2027-02-15 (+7d) | 2027-03-03 → 2027-03-15 (+12d) |  |
| SDR-2-CON-SL-ZA-3580 | Unit Substation Install for Street Lighting | 2027-02-08 → 2027-02-15 (+7d) | 2027-03-03 → 2027-03-15 (+12d) | 2d → 33d |
| 2 | **MV Network** |  | 2026-11-16 → 2026-11-23 (+7d) |  |
| 1 | **LOOP 1** |  | 2026-11-16 → 2026-11-23 (+7d) |  |
| 6 | **Excavation** |  | 2026-10-12 → 2026-10-19 (+7d) |  |
| SDR-2-CON-MV-ZA-1280 | Excavation Works |  | 2026-10-12 → 2026-10-19 (+7d) | 62d → 56d |
| 7 | **Pipe laying** |  | 2026-10-12 → 2026-10-19 (+7d) |  |
| SDR-2-CON-MV-ZA-1290 | Pipe Laying |  | 2026-10-12 → 2026-10-19 (+7d) | 66d → 60d |
| 8 | **Backfilling** |  | 2026-10-12 → 2026-10-19 (+7d) |  |
| SDR-2-CON-MV-ZA-1310 | Backfilling Works |  | 2026-10-12 → 2026-10-19 (+7d) | 66d → 60d |
| 9 | **Pulling Cable** | 2026-10-25 → 2026-11-01 (+7d) | 2026-11-16 → 2026-11-23 (+7d) |  |
| SDR-2-CON-MV-ZA-1300 | Pulling Cable | 2026-10-25 → 2026-11-01 (+7d) | 2026-11-16 → 2026-11-23 (+7d) | 66d → 60d |
| 2 | **LOOP 2** |  | 2026-11-16 → 2026-11-23 (+7d) |  |
| 6 | **Excavation** |  | 2026-10-12 → 2026-10-19 (+7d) |  |
| SDR-2-CON-MV-ZA-1320 | Excavation Works |  | 2026-10-12 → 2026-10-19 (+7d) | 62d → 56d |
| 7 | **Pipe laying** |  | 2026-10-12 → 2026-10-19 (+7d) |  |
| SDR-2-CON-MV-ZA-1330 | Pipe Laying |  | 2026-10-12 → 2026-10-19 (+7d) | 62d → 56d |
| 8 | **Backfilling** |  | 2026-10-12 → 2026-10-19 (+7d) |  |
| SDR-2-CON-MV-ZA-1350 | Backfilling Works |  | 2026-10-12 → 2026-10-19 (+7d) | 62d → 56d |
| 9 | **Pulling Cable** | 2026-10-25 → 2026-11-01 (+7d) | 2026-11-16 → 2026-11-23 (+7d) |  |
| SDR-2-CON-MV-ZA-1340 | Pulling Cable | 2026-10-25 → 2026-11-01 (+7d) | 2026-11-16 → 2026-11-23 (+7d) | 62d → 56d |
| 3 | **TELECOMMUNICATIONS Works** |  | 2026-11-28 → 2026-12-05 (+7d) |  |
| 5 | **TELECOMMUNICATION IN ( PH2-G-MCA0 )** |  | 2026-11-28 → 2026-12-05 (+7d) |  |
| 3 | **Ducts** |  | 2026-11-28 → 2026-12-05 (+7d) |  |
| 2 | **Excavation** |  | 2026-10-12 → 2026-10-19 (+7d) |  |
| SDR-2-CON-TE-ZA-4200 | Excavation for telecom crossing ducts & trenches |  | 2026-10-12 → 2026-10-19 (+7d) | 52d → 46d |
| 5 | **Pipe laying** |  | 2026-10-12 → 2026-10-19 (+7d) |  |
| SDR-2-CON-TE-ZA-4210 | HDPE Pipes for Telecom Installation |  | 2026-10-12 → 2026-10-19 (+7d) | 52d → 46d |
| 6 | **Backfilling** | 2026-10-13 → 2026-10-20 (+7d) | 2026-11-04 → 2026-11-11 (+7d) |  |
| SDR-2-CON-TE-ZA-4220 | Backfilling over HDPE Telecom Pipes | 2026-10-13 → 2026-10-20 (+7d) | 2026-11-04 → 2026-11-11 (+7d) | 52d → 46d |
| 7 | **Pulling Cable** | 2026-11-05 → 2026-11-12 (+7d) | 2026-11-28 → 2026-12-05 (+7d) |  |
| SDR-2-CON-TE-ZA-4270 | Pulling Cable | 2026-11-05 → 2026-11-12 (+7d) | 2026-11-28 → 2026-12-05 (+7d) | 52d → 46d |
| 4 | **Manholes** |  | 2026-11-04 → 2026-11-11 (+7d) |  |
| 1 | **Excavation** |  | 2026-10-12 → 2026-10-19 (+7d) |  |
| SDR-2-CON-TE-ZA-4230 | Excavation for Telecom Manholes |  | 2026-10-12 → 2026-10-19 (+7d) | 72d → 66d |
| 2 | **Bedding Work** |  | 2026-10-12 → 2026-10-19 (+7d) |  |
| SDR-2-CON-TE-ZA-4280 | Sand bedding for Telecom Manhole |  | 2026-10-12 → 2026-10-19 (+7d) | 72d → 66d |
| 3 | **Install Manholes** |  | 2026-10-12 → 2026-10-19 (+7d) |  |
| SDR-2-CON-TE-ZA-4240 | Installation of Telecom Manhole |  | 2026-10-12 → 2026-10-19 (+7d) | 72d → 66d |
| 4 | **Testting** |  | 2026-10-12 → 2026-10-19 (+7d) |  |
| SDR-2-CON-TE-ZA-4250 | Telecom Manhole finishing works |  | 2026-10-12 → 2026-10-19 (+7d) | 72d → 66d |
| 5 | **Backfilling** | 2026-10-13 → 2026-10-20 (+7d) | 2026-11-04 → 2026-11-11 (+7d) |  |
| SDR-2-CON-TE-ZA-4260 | Backfilling over Telecom Manhole | 2026-10-13 → 2026-10-20 (+7d) | 2026-11-04 → 2026-11-11 (+7d) | 72d → 66d |
| 6 | **TELECOMMUNICATION IN ( PH2-G-MCE0 )** |  | 2026-11-14 → 2026-11-21 (+7d) |  |
| 3 | **Ducts** |  | 2026-10-12 → 2026-10-19 (+7d) |  |
| 5 | **Pipe laying** |  | 2026-10-12 → 2026-10-19 (+7d) |  |
| SDR-2-CON-TE-ZA-4300 | HDPE Pipes for Telecom Installation |  | 2026-10-12 → 2026-10-19 (+7d) |  |
| 6 | **Backfilling** |  | 2026-10-12 → 2026-10-19 (+7d) |  |
| SDR-2-CON-TE-ZA-4310 | Backfilling over HDPE Telecom Pipes |  | 2026-10-12 → 2026-10-19 (+7d) |  |
| 7 | **Pulling Cable** |  | 2026-10-12 → 2026-10-19 (+7d) |  |
| SDR-2-CON-TE-ZA-4360 | Pulling Cable |  | 2026-10-12 → 2026-10-19 (+7d) |  |
| 4 | **Manholes** |  | 2026-11-14 → 2026-11-21 (+7d) |  |
| 1 | **Excavation** |  | 2026-10-12 → 2026-10-19 (+7d) |  |
| SDR-2-CON-TE-ZA-4320 | Excavation for Telecom Manholes |  | 2026-10-12 → 2026-10-19 (+7d) | 64d → 58d |
| 2 | **Bedding Work** |  | 2026-10-12 → 2026-10-19 (+7d) |  |
| SDR-2-CON-TE-ZA-4370 | Sand bedding for Telecom Manhole |  | 2026-10-12 → 2026-10-19 (+7d) | 64d → 58d |
| 3 | **Install Manholes** |  | 2026-10-12 → 2026-10-19 (+7d) |  |
| SDR-2-CON-TE-ZA-4330 | Installation of Telecom Manhole |  | 2026-10-12 → 2026-10-19 (+7d) | 64d → 58d |

| ID | Task | Start | Finish | Total float | Predecessors |
| --- | --- | --- | --- | --- | --- |
| 4 | **Testting** | 2026-10-13 → 2026-10-20 (+7d) | 2026-10-20 → 2026-10-27 (+7d) |  |  |
| SDR-2-CON-TE-ZA-4340 | Telecom Manhole finishing works | 2026-10-13 → 2026-10-20 (+7d) | 2026-10-20 → 2026-10-27 (+7d) | 64d → 58d |  |
| 5 | **Backfilling** | 2026-10-21 → 2026-10-28 (+7d) | 2026-11-14 → 2026-11-21 (+7d) |  |  |
| SDR-2-CON-TE-ZA-4350 | Backfilling over Telecom Manhole | 2026-10-21 → 2026-10-28 (+7d) | 2026-11-14 → 2026-11-21 (+7d) | 64d → 58d |  |
| 7 | **TELECOMMUNICATION IN ( PH2-G-MCF0 )** |  | 2026-11-12 → 2026-11-19 (+7d) |  |  |
| 3 | **Ducts** |  | 2026-10-12 → 2026-10-19 (+7d) |  |  |
| 2 | **Excavation** |  | 2026-10-12 → 2026-10-19 (+7d) |  |  |
| SDR-2-CON-TE-ZA-4380 | Excavation for telecom crossing ducts & trenches |  | 2026-10-12 → 2026-10-19 (+7d) | 90d → 84d |  |
| 5 | **Pipe laying** |  | 2026-10-12 → 2026-10-19 (+7d) |  |  |
| SDR-2-CON-TE-ZA-4390 | HDPE Pipes for Telecom Installation |  | 2026-10-12 → 2026-10-19 (+7d) | 117d → 111d |  |
| 6 | **Backfilling** |  | 2026-10-12 → 2026-10-19 (+7d) |  |  |
| SDR-2-CON-TE-ZA-4400 | Backfilling over HDPE Telecom Pipes |  | 2026-10-12 → 2026-10-19 (+7d) | 117d → 111d |  |
| 7 | **Pulling Cable** |  | 2026-10-12 → 2026-10-19 (+7d) |  |  |
| SDR-2-CON-TE-ZA-4450 | Pulling Cable |  | 2026-10-12 → 2026-10-19 (+7d) | 117d → 111d |  |
| 4 | **Manholes** |  | 2026-11-12 → 2026-11-19 (+7d) |  |  |
| 1 | **Excavation** |  | 2026-10-12 → 2026-10-19 (+7d) |  |  |
| SDR-2-CON-TE-ZA-4410 | Excavation for Telecom Manholes |  | 2026-10-12 → 2026-10-19 (+7d) | 90d → 84d |  |
| 2 | **Bedding Work** |  | 2026-10-12 → 2026-10-19 (+7d) |  |  |
| SDR-2-CON-TE-ZA-4460 | Sand bedding for Telecom Manhole |  | 2026-10-12 → 2026-10-19 (+7d) | 90d → 84d |  |
| 3 | **Install Manholes** |  | 2026-10-12 → 2026-10-19 (+7d) |  |  |
| SDR-2-CON-TE-ZA-4420 | Installation of Telecom Manhole |  | 2026-10-12 → 2026-10-19 (+7d) | 90d → 84d |  |
| 4 | **Testting** | 2026-10-13 → 2026-10-20 (+7d) | 2026-10-20 → 2026-10-27 (+7d) |  |  |
| SDR-2-CON-TE-ZA-4430 | Telecom Manhole finishing works | 2026-10-13 → 2026-10-20 (+7d) | 2026-10-20 → 2026-10-27 (+7d) | 90d → 84d |  |
| 5 | **Backfilling** | 2026-10-21 → 2026-10-28 (+7d) | 2026-11-12 → 2026-11-19 (+7d) |  |  |
| SDR-2-CON-TE-ZA-4440 | Backfilling over Telecom Manhole | 2026-10-21 → 2026-10-28 (+7d) | 2026-11-12 → 2026-11-19 (+7d) | 90d → 84d |  |
| 4 | **TELECOMMUNICATION IN ( PH2-G-MCG0 )** |  | 2026-11-25 → 2026-12-02 (+7d) |  |  |
| 3 | **Ducts** |  | 2026-10-12 → 2026-10-19 (+7d) |  |  |
| 2 | **Excavation** |  | 2026-10-12 → 2026-10-19 (+7d) |  |  |
| SDR-2-CON-TE-ZA-4470 | Excavation for telecom crossing ducts & trenches |  | 2026-10-12 → 2026-10-19 (+7d) |  |  |
| 5 | **Pipe laying** |  | 2026-10-12 → 2026-10-19 (+7d) |  |  |
| SDR-2-CON-TE-ZA-4480 | HDPE Pipes for Telecom Installation |  | 2026-10-12 → 2026-10-19 (+7d) |  |  |
| 6 | **Backfilling** |  | 2026-10-12 → 2026-10-19 (+7d) |  |  |
| SDR-2-CON-TE-ZA-4490 | Backfilling over HDPE Telecom Pipes |  | 2026-10-12 → 2026-10-19 (+7d) |  |  |
| 7 | **Pulling Cable** |  | 2026-10-12 → 2026-10-19 (+7d) |  |  |
| SDR-2-CON-TE-ZA-4540 | Pulling Cable |  | 2026-10-12 → 2026-10-19 (+7d) |  |  |
| 4 | **Manholes** |  | 2026-11-25 → 2026-12-02 (+7d) |  |  |
| 1 | **Excavation** |  | 2026-10-12 → 2026-10-19 (+7d) |  |  |
| SDR-2-CON-TE-ZA-4500 | Excavation for Telecom Manholes |  | 2026-10-12 → 2026-10-19 (+7d) | 122d → 116d |  |
| 2 | **Bedding Work** |  | 2026-10-12 → 2026-10-19 (+7d) |  |  |
| SDR-2-CON-TE-ZA-4550 | Sand bedding for Telecom Manhole |  | 2026-10-12 → 2026-10-19 (+7d) | 122d → 116d |  |
| 3 | **Install Manholes** |  | 2026-10-12 → 2026-10-19 (+7d) |  |  |
| SDR-2-CON-TE-ZA-4510 | Installation of Telecom Manhole |  | 2026-10-12 → 2026-10-19 (+7d) | 122d → 116d |  |
| 4 | **Testting** | 2026-10-13 → 2026-10-20 (+7d) | 2026-10-20 → 2026-10-27 (+7d) |  |  |
| SDR-2-CON-TE-ZA-4520 | Telecom Manhole finishing works | 2026-10-13 → 2026-10-20 (+7d) | 2026-10-20 → 2026-10-27 (+7d) | 122d → 116d |  |
| 5 | **Backfilling** | 2026-11-02 → 2026-11-09 (+7d) | 2026-11-25 → 2026-12-02 (+7d) |  |  |
| SDR-2-CON-TE-ZA-4530 | Backfilling over Telecom Manhole | 2026-11-02 → 2026-11-09 (+7d) | 2026-11-25 → 2026-12-02 (+7d) | 122d → 116d |  |
| ZA | **ZONE A** |  | 2027-07-01 → 2027-07-05 (+4d) |  |  |
| 2 | **IRRIGATION WORKS** |  | 2027-07-01 → 2027-07-05 (+4d) |  |  |
| 1 | **IRRIGATION WORKS IN ( PH2-COL-MC10 )** |  | 2027-07-01 → 2027-07-05 (+4d) |  |  |
| 7 | **Pre install** |  | 2027-05-08 → 2027-05-05 (-3d) |  |  |
| SDR-2-CON-IR-ZA-1000 | Pre Install for irrigation Works |  | 2027-05-08 → 2027-05-05 (-3d) | 0.74d → 2d | SDR-2-CON-SE-ZA-1490, SDR-2-CON-SE-ZA-1550, SDR-2-CON-SE-ZA-1560, SDR-2-CON-SE-ZA-1620, SDR-2-CON-SE-ZA-1590, SDR-2-CON-SE-ZA-1650, SDR-2-CON-SE-ZA-1660, SDR-2-CON-SE-ZA-1720, SDR-2-CON-SE-ZA-1690, SDR-2-CON-SE-ZA-1750, SDR-2-CON-SE-ZA-1760, SDR-2-CON-SE-ZA-1820, SDR-2-CON-SE-ZA-1790, SDR-2-CON-SE-ZA-1850, SDR-2-CON-SE-ZA-1860, SDR-2-CON-SE-ZA-1920, SDR-2-CON-SE-ZA-1890, SDR-2-CON-SE-ZA-1950, SDR-2-CON-SE-ZA-1960, SDR-2-CON-SE-ZA-2020, SDR-2-CON-SE-ZA-1990, SDR-2-CON-SE-ZA-2050, SDR-2-CON-SE-ZA-2060, SDR-2-CON-SE-ZA-2120, SDR-2-CON-SE-ZA-2070, SDR-2-CON-SE-ZA-2080, SDR-2-CON-SE-ZA-2130, SDR-2-CON-SE-ZA-2090, SDR-2-CON-SE-ZA-2150, SDR-2-CON-SE-ZA-2100, SDR-2-CON-SE-ZA-2140, SDR-2-CON-SE-ZA-2160, SDR-2-CON-SE-ZA-2220, SDR-2-CON-SE-ZA-2170, SDR-2-CON-SE-ZA-2230, SDR-2-CON-SE-ZA-2190, SDR-2-CON-SE-ZA-2250, SDR-2-CON-SE-ZA-2200, SDR-2-CON-SE-ZA-2240, SDR-2-CON-SE-ZA-2260, SDR-2-CON-SE-ZA-2320, SDR-2-CON-SE-ZA-2270, SDR-2-CON-SE-ZA-2280, SDR-2-CON-SE-ZA-2330, SDR-2-CON-SE-ZA-2290, SDR-2-CON-SE-ZA-2350, SDR-2-CON-SE-ZA-2300, SDR-2-CON-SE-ZA-2340, SDR-2-CON-SE-ZA-2360, SDR-2-CON-SE-ZA-2420, SDR-2-CON-SE-ZA-2370, SDR-2-CON-SE-ZA-2380, SDR-2-CON-SE-ZA-2430, SDR-2-CON-SE-ZA-2390, SDR-2-CON-SE-ZA-2450, SDR-2-CON-SE-ZA-2400, SDR-2-CON-SE-ZA-2440, SDR-2-CON-PW-ZG-1000, SDR-2-CON-PW-ZA-2910, SDR-2-CON-PW-ZA-3010, SDR-2-CON-PW-ZA-3020, SDR-2-CON-PW-ZA-3110, SDR-2-CON-PW-ZA-3120, SDR-2-CON-PW-ZA-2560, SDR-2-CON-TE-ZA-4290, SDR-2-CON-RW-ZA-1720, SDR-2-CON-RW-ZA-1720 FF, SDR-2-CON-ST-ZA-6120, SDR-2-CON-SE-ZA-1010 FF, SDR-2-CON-SE-ZA-1020 FF, SDR-2-CON-SE-ZA-1040 FF, SDR-2-CON-SE-ZA-1050 FF, SDR-2-CON-SE-ZA-1470 FF, SDR-2-CON-SE-ZA-1480 FF, SDR-2-CON-SE-ZA-1500 FF, SDR-2-CON-SE-ZA-1510 FF, SDR-2-CON-SE-ZA-1570 FF, SDR-2-CON-SE-ZA-1580 FF, SDR-2-CON-SE-ZA-1600 FF, SDR-2-CON-SE-ZA-1610 FF, SDR-2-CON-SE-ZA-1670 FF, SDR-2-CON-SE-ZA-1680 FF, SDR-2-CON-SE-ZA-1700 FF, SDR-2-CON-SE-ZA-1710 FF, SDR-2-CON-SE-ZA-1770 FF, SDR-2-CON-SE-ZA-1780 FF, SDR-2-CON-SE-ZA-1800 FF, SDR-2-CON-SE-ZA-1810 FF, SDR-2-CON-SE-ZA-1870 FF, SDR-2-CON-SE-ZA-1880 FF, SDR-2-CON-SE-ZA-1900 FF, SDR-2-CON-SE-ZA-1910 FF, SDR-2-CON-SE-ZA-1970 FF, SDR-2-CON-SE-ZA-2000 FF, SDR-2-CON-SE-ZA-2110 FF, SDR-2-CON-SE-ZA-2180 FF, SDR-2-CON-SE-ZA-2210 FF, SDR-2-CON-SE-ZA-2310 FF, SDR-2-CON-SE-ZA-2410 FF, SDR-2-CON-TS-ZA-1000 FF, SDR-2-CON-TS-ZA-3100 FF, SDR-2-CON-TS-ZA-3130 FF, SDR-2-CON-TS-ZA-3110 FF, SDR-2-CON-TS-ZA-3120 FF, SDR-2-CON-TS-ZA-3140 FF, SDR-2-CON-TS-ZA-2300 FF, SDR-2-CON-TS-ZA-2380 FF, SDR-2-CON-TS-ZA-2310 FF, SDR-2-CON-TS-ZA-2400 FF, SDR-2-CON-TS-ZA-2900 FF, SDR-2-CON-TS-ZA-3000 FF, SDR-2-CON-TS-ZA-2500 FF, SDR-2-CON-PW-ZA-1000 FF, SDR-2-CON-PW-ZA-2200 FF, SDR-2-CON-PW-ZA-1010 FF, SDR-2-CON-PW-ZA-2260 FF, SDR-2-CON-PW-ZA-2340 FF, SDR-2-CON-PW-ZA-2270 FF, SDR-2-CON-PW-ZA-2330 FF, SDR-2-CON-PW-ZA-2350 FF, SDR-2-CON-PW-ZG-1500 FF, SDR-2-CON-PW-ZG-1010 FF, SDR-2-CON-PW-ZA-2940 FF, SDR-2-CON-PW-ZA-2920 FF, SDR-2-CON-PW-ZA-3040 FF, SDR-2-CON-PW-ZA-3140 FF, SDR-2-CON-PW-ZA-2640 FF, SDR-2-CON-PW-ZA-2570 FF, SDR-2-CON-SL-ZA-1000 FF, SDR-2-CON-SL-ZA-1010 FF, SDR-2-CON-SL-ZA-2870 FF, SDR-2-CON-SL-ZA-2880 FF, SDR-2-CON-SL-ZA-1300 FF, SDR-2-CON-SL-ZA-1310 FF, SDR-2-CON-SL-ZA-2950 FF, SDR-2-CON-SL-ZA-2960 FF, SDR-2-CON-SL-ZA-2990 FF, SDR-2-CON-SL-ZA-3000 FF, SDR-2-CON-SL-ZA-3030 FF, SDR-2-CON-SL-ZA-3040 FF, SDR-2-CON-SL-ZA-3070 FF, SDR-2-CON-SL-ZA-3080 FF, SDR-2-CON-SL-ZA-3110 FF, SDR-2-CON-SL-ZA-3120 FF, SDR-2-CON-SL-ZA-3150 FF, SDR-2-CON-SL-ZA-3160 FF, SDR-2-CON-SL-ZA-3190 FF, SDR-2-CON-SL-ZA-3200 FF, SDR-2-CON-SL-ZA-2910 FF, SDR-2-CON-SL-ZA-2920 FF, SDR-2-CON-MV-ZA-1000 FF, SDR-2-CON-MV-ZA-1070 FF, SDR-2-CON-MV-ZA-1150 FF, SDR-2-CON-MV-ZA-1160 FF, SDR-2-CON-MV-ZA-1170 FF, SDR-2-CON-MV-ZA-1200 FF, SDR-2-CON-MV-ZA-1210 FF, SDR-2-CON-MV-ZA-1240 FF, SDR-2-CON-MV-ZA-1250 FF, SDR-2-CON-TE-ZA-1030 FF, SDR-2-CON-TE-ZA-1850 FF, SDR-2-CON-TE-ZA-3210 FF, SDR-2-CON-TE-ZA-3220 FF, SDR-2-CON-TE-ZA-3230 FF, SDR-2-CON-TE-ZA-3240 FF, SDR-2-CON-TE-ZA-3290 FF, SDR-2-CON-TE-ZA-3250 FF, SDR-2-CON-TE-ZA-3300 FF, SDR-2-CON-TE-ZA-3330 FF, SDR-2-CON-TE-ZA-3390 FF, SDR-2-CON-TE-ZA-3420 FF, SDR-2-CON-TE-ZA-3480 FF, SDR-2-CON-TE-ZA-3490 FF, SDR-2-CON-TE-ZA-3510 FF, SDR-2-CON-TE-ZA-3560 FF, SDR-2-CON-TE-ZA-3570 FF, SDR-2-CON-TE-ZA-3580 FF, SDR-2-CON-TE-ZA-3600 FF, SDR-2-CON-TE-ZA-3650 FF, SDR-2-CON-TE-ZA-3660 FF, SDR-2-CON-TE-ZA-3670 FF, SDR-2-CON-TE-ZA-3750 FF, SDR-2-CON-TE-ZA-3760 FF, SDR-2-CON-TE-ZA-3840 FF, SDR-2-CON-TE-ZA-3850 FF, SDR-2-CON-TE-ZA-3930 FF, SDR-2-CON-TE-ZA-4020 FF, SDR-2-CON-TE-ZA-4110 FF, SDR-2-CON-TE-ZA-4120 FF, SDR-2-CON-TE-ZA-4140 FF, SDR-2-CON-TE-ZA-4190 FF, SDR-2-CON-TE-ZA-4150 FF, SDR-2-CON-SL-ZA-3230 FF, SDR-2-CON-SL-ZA-3240 FF, SDR-2-CON-SL-ZA-3270 FF, SDR-2-CON-SL-ZA-3280 FF, SDR-2-CON-SL-ZA-3310 FF, SDR-2-CON-SL-ZA-3320 FF, SDR-2-CON-SL-ZA-3350 FF, SDR-2-CON-SL-ZA-3360 FF, SDR-2-CON-SL-ZA-3390 FF, SDR-2-CON-SL-ZA-3400 FF, SDR-2-CON-SL-ZA-3420 FF, SDR-2-CON-SL-ZA-3410 FF, SDR-2-CON-MV-ZA-1280 FF, SDR-2-CON-MV-ZA-1290 FF, SDR-2-CON-MV-ZA-1310 FF, SDR-2-CON-MV-ZA-1320 FF, SDR-2-CON-MV-ZA-1330 FF, SDR-2-CON-MV-ZA-1350 FF, SDR-2-CON-TE-ZA-4200 FF, SDR-2-CON-TE-ZA-4210 FF, SDR-2-CON-TE-ZA-4230 FF, SDR-2-CON-TE-ZA-4280 FF, SDR-2-CON-TE-ZA-4240 FF, SDR-2-CON-TE-ZA-4250 FF, SDR-2-CON-TE-ZA-4300 FF, SDR-2-CON-TE-ZA-4310 FF, SDR-2-CON-TE-ZA-4360 FF, SDR-2-CON-TE-ZA-4320 FF, SDR-2-CON-TE-ZA-4370 FF, SDR-2-CON-TE-ZA-4330 FF, SDR-2-CON-TE-ZA-4380 FF, SDR-2-CON-TE-ZA-4390 FF, SDR-2-CON-TE-ZA-4400 FF, SDR-2-CON-TE-ZA-4450 FF, SDR-2-CON-TE-ZA-4410 FF, SDR-2-CON-TE-ZA-4460 FF, SDR-2-CON-TE-ZA-4420 FF, SDR-2-CON-TE-ZA-4470 FF, SDR-2-CON-TE-ZA-4480 FF, SDR-2-CON-TE-ZA-4490 FF, SDR-2-CON-TE-ZA-4540 FF, SDR-2-CON-TE-ZA-4500 FF, SDR-2-CON-TE-ZA-4550 FF, SDR-2-CON-TE-ZA-4510 FF, SDR-2-CON-CC-ZA-1000 FF, SDR-2-CON-CC-ZA-1030 FF, SDR-2-CON-CC-ZA-1080 FF, SDR-2-CON-CC-ZA-1090 FF, SDR-2-CON-CC-ZA-1240 FF, SDR-2-CON-CC-ZA-1250 FF, SDR-2-CON-CC-ZA-1380 FF, SDR-2-CON-CC-ZA-1390 FF, SDR-2-CON-CC-ZA-1670 FF, SDR-2-CON-CC-ZA-1700 FF, SDR-2-CON-CC-ZA-1750 FF, SDR-2-CON-CC-ZA-1790 FF, SDR-2-CON-CC-ZA-1830 FF, SDR-2-CON-ST-ZA-4020 FF, SDR-2-CON-SE-ZA-1430 FF, SDR-2-CON-SE-ZA-1440 FF, SDR-2-CON-SE-ZA-1530 FF, SDR-2-CON-SE-ZA-1540 FF, SDR-2-CON-SE-ZA-1630 FF, SDR-2-CON-SE-ZA-1730 FF, SDR-2-CON-SE-ZA-1740 FF, SDR-2-CON-SE-ZA-1830 FF, SDR-2-CON-SE-ZA-1840 FF, SDR-2-CON-SE-ZA-1930 FF, SDR-2-CON-SE-ZA-1940 FF, SDR-2-CON-SE-ZA-1980 FF, SDR-2-CON-SE-ZA-2030 FF, SDR-2-CON-SE-ZA-2010 FF, SDR-2-CON-SE-ZA-2040 FF, SDR-2-CON-TS-ZA-1900 FF, SDR-2-CON-TS-ZA-1010 FF, SDR-2-CON-TS-ZA-1080 FF, SDR-2-CON-TS-ZA-1910 FF, SDR-2-CON-TS-ZA-1040 FF, SDR-2-CON-TS-ZA-1020 FF, SDR-2-CON-TS-ZA-1050 FF, SDR-2-CON-TS-ZA-1060 FF, SDR-2-CON-TS-ZA-1070 FF, SDR-2-CON-TS-ZA-2200 FF, SDR-2-CON-TS-ZA-2280 FF, SDR-2-CON-TS-ZA-2210 FF, SDR-2-CON-TS-ZA-2270 FF, SDR-2-CON-TS-ZA-2290 FF, SDR-2-CON-TS-ZA-2230 FF, SDR-2-CON-TS-ZA-2240 FF, SDR-2-CON-TS-ZA-2250 FF, SDR-2-CON-TS-ZA-2260 FF, SDR-2-CON-TS-ZA-1180 FF, SDR-2-CON-TS-ZA-1920 FF, SDR-2-CON-TS-ZA-1190 FF, SDR-2-CON-TS-ZA-1260 FF, SDR-2-CON-TS-ZA-1930 FF, SDR-2-CON-TS-ZA-2010 FF, SDR-2-CON-TS-ZA-2000 FF, SDR-2-CON-TS-ZA-2020 FF, SDR-2-CON-TS-ZA-2030 FF, SDR-2-CON-TS-ZA-2040 FF, SDR-2-CON-TS-ZA-1270 FF, SDR-2-CON-TS-ZA-1940 FF, SDR-2-CON-TS-ZA-1280 FF, SDR-2-CON-TS-ZA-1350 FF, SDR-2-CON-TS-ZA-1950 FF, SDR-2-CON-TS-ZA-2060 FF, SDR-2-CON-TS-ZA-2050 FF, SDR-2-CON-TS-ZA-2070 FF, SDR-2-CON-TS-ZA-2080 FF, SDR-2-CON-TS-ZA-2090 FF, SDR-2-CON-TS-ZA-2660 FF, SDR-2-CON-TS-ZA-2650 FF, SDR-2-CON-TS-ZA-2670 FF, SDR-2-CON-TS-ZA-2680 FF, SDR-2-CON-TS-ZA-2690 FF, SDR-2-CON-TS-ZA-2700 FF, SDR-2-CON-TS-ZA-2730 FF, SDR-2-CON-TS-ZA-2710 FF, SDR-2-CON-TS-ZA-2720 FF, SDR-2-CON-TS-ZA-2740 FF, SDR-2-CON-TS-ZA-2760 FF, SDR-2-CON-TS-ZA-2750 FF, SDR-2-CON-TS-ZA-2770 FF, SDR-2-CON-TS-ZA-2780 FF, SDR-2-CON-TS-ZA-2800 FF, SDR-2-CON-TS-ZA-2830 FF, SDR-2-CON-TS-ZA-2810 FF, SDR-2-CON-TS-ZA-2820 FF, SDR-2-CON-TS-ZA-2840 FF, SDR-2-CON-TS-ZA-2860 FF, SDR-2-CON-TS-ZA-2850 FF, SDR-2-CON-TS-ZA-2870 FF, SDR-2-CON-TS-ZA-2880 FF, SDR-2-CON-TS-ZA-2890 FF, SDR-2-CON-TS-ZA-1630 FF, SDR-2-CON-TS-ZA-1960 FF, SDR-2-CON-TS-ZA-1640 FF, SDR-2-CON-TS-ZA-1710 FF, SDR-2-CON-TS-ZA-1970 FF, SDR-2-CON-TS-ZA-2110 FF, SDR-2-CON-TS-ZA-2100 FF, SDR-2-CON-TS-ZA-2120 FF, SDR-2-CON-TS-ZA-2130 FF, SDR-2-CON-TS-ZA-2140 FF, SDR-2-CON-TS-ZA-1720 FF, SDR-2-CON-TS-ZA-1980 FF, SDR-2-CON-TS-ZA-1730 FF, SDR-2-CON-TS-ZA-1800 FF, SDR-2-CON-TS-ZA-1990 FF, SDR-2-CON-TS-ZA-2160 FF, SDR-2-CON-TS-ZA-2150 FF, SDR-2-CON-TS-ZA-2170 FF, SDR-2-CON-TS-ZA-2180 FF, SDR-2-CON-TS-ZA-2190 FF, SDR-2-CON-TS-ZA-3160 FF, SDR-2-CON-TS-ZA-3150 FF, SDR-2-CON-TS-ZA-3170 FF, SDR-2-CON-TS-ZA-3180 FF, SDR-2-CON-TS-ZA-3190 FF, SDR-2-CON-TS-ZA-2370 FF, SDR-2-CON-TS-ZA-2390 FF, SDR-2-CON-TS-ZA-2330 FF, SDR-2-CON-TS-ZA-2320 FF, SDR-2-CON-TS-ZA-2340 FF, SDR-2-CON-TS-ZA-2350 FF, SDR-2-CON-TS-ZA-2360 FF, SDR-2-CON-TS-ZA-2430 FF, SDR-2-CON-TS-ZA-2410 FF, SDR-2-CON-TS-ZA-2420 FF, SDR-2-CON-TS-ZA-2440 FF, SDR-2-CON-TS-ZA-2460 FF, SDR-2-CON-TS-ZA-2450 FF, SDR-2-CON-TS-ZA-2470 FF, SDR-2-CON-TS-ZA-2480 FF, SDR-2-CON-TS-ZA-2490 FF, SDR-2-CON-TS-ZA-2930 FF, SDR-2-CON-TS-ZA-2910 FF, SDR-2-CON-TS-ZA-2920 FF, SDR-2-CON-TS-ZA-2940 FF, SDR-2-CON-TS-ZA-2960 FF, SDR-2-CON-TS-ZA-2950 FF, SDR-2-CON-TS-ZA-2970 FF, SDR-2-CON-TS-ZA-2980 FF, SDR-2-CON-TS-ZA-2990 FF, SDR-2-CON-TS-ZA-3030 FF, SDR-2-CON-TS-ZA-3010 FF, SDR-2-CON-TS-ZA-3020 FF, SDR-2-CON-TS-ZA-3040 FF, SDR-2-CON-TS-ZA-3060 FF, SDR-2-CON-TS-ZA-3050 FF, SDR-2-CON-TS-ZA-2530 FF, SDR-2-CON-TS-ZA-2510 FF, SDR-2-CON-TS-ZA-2520 FF, SDR-2-CON-TS-ZA-2560 FF, SDR-2-CON-TS-ZA-2550 FF, SDR-2-CON-TS-ZA-2570 FF, SDR-2-CON-TS-ZA-2580 FF, SDR-2-CON-TS-ZA-2590 FF, SDR-2-CON-PW-ZA-1080 FF, SDR-2-CON-PW-ZA-2210 FF, SDR-2-CON-PW-ZA-1040 FF, SDR-2-CON-PW-ZA-1020 FF, SDR-2-CON-PW-ZA-1050 FF, SDR-2-CON-PW-ZA-1030 FF, SDR-2-CON-PW-ZA-1070 FF, SDR-2-CON-PW-ZA-2300 FF, SDR-2-CON-PW-ZA-2280 FF, SDR-2-CON-PW-ZA-2310 FF, SDR-2-CON-PW-ZA-2290 FF, SDR-2-CON-PW-ZA-1200 FF, SDR-2-CON-PW-ZA-2220 FF, SDR-2-CON-PW-ZA-1210 FF, SDR-2-CON-PW-ZA-1280 FF, SDR-2-CON-PW-ZA-2230 FF, SDR-2-CON-PW-ZA-2680 FF, SDR-2-CON-PW-ZA-2660 FF, SDR-2-CON-PW-ZA-2690 FF, SDR-2-CON-PW-ZA-2670 FF, SDR-2-CON-PW-ZA-2700 FF, SDR-2-CON-PW-ZA-2710 FF, SDR-2-CON-PW-ZA-2780 FF, SDR-2-CON-PW-ZA-2760 FF, SDR-2-CON-PW-ZA-2790 FF, SDR-2-CON-PW-ZA-2770 FF, SDR-2-CON-PW-ZA-2800 FF, SDR-2-CON-PW-ZA-1400 FF, SDR-2-CON-PW-ZA-2240 FF, SDR-2-CON-PW-ZA-1410 FF, SDR-2-CON-PW-ZA-1480 FF, SDR-2-CON-PW-ZA-2250 FF, SDR-2-CON-PW-ZA-3230 FF, SDR-2-CON-PW-ZA-3210 FF, SDR-2-CON-PW-ZA-3240 FF, SDR-2-CON-PW-ZA-3220 FF, SDR-2-CON-PW-ZA-3260 FF, SDR-2-CON-PW-ZA-3290 FF, SDR-2-CON-PW-ZA-3270 FF, SDR-2-CON-PW-ZA-3280 FF, SDR-2-CON-PW-ZA-3300 FF, SDR-2-CON-PW-ZA-3330 FF, SDR-2-CON-PW-ZA-3310 FF, SDR-2-CON-PW-ZA-3340 FF, SDR-2-CON-PW-ZA-3320 FF, SDR-2-CON-PW-ZA-3360 FF, SDR-2-CON-PW-ZA-3390 FF, SDR-2-CON-PW-ZA-3370 FF, SDR-2-CON-PW-ZA-3380 FF, SDR-2-CON-PW-ZA-3400 FF, SDR-2-CON-PW-ZA-3460 FF, SDR-2-CON-PW-ZA-3490 FF, SDR-2-CON-PW-ZA-3470 FF, SDR-2-CON-PW-ZA-3480 FF, SDR-2-CON-PW-ZA-3500 FF, SDR-2-CON-PW-ZA-3530 FF, SDR-2-CON-PW-ZA-3510 FF, SDR-2-CON-PW-ZA-3540 FF, SDR-2-CON-PW-ZA-3520 FF, SDR-2-CON-PW-ZA-3550 FF, SDR-2-CON-PW-ZA-3560 FF, SDR-2-CON-PW-ZA-3590 FF, SDR-2-CON-PW-ZA-3570 FF, SDR-2-CON-PW-ZA-3580 FF, SDR-2-CON-PW-ZA-3600 FF, SDR-2-CON-PW-ZA-2810 FF, SDR-2-CON-PW-ZA-2840 FF, SDR-2-CON-PW-ZA-2820 FF, SDR-2-CON-PW-ZA-2830 FF, SDR-2-CON-PW-ZA-2880 FF, SDR-2-CON-PW-ZA-2860 FF, SDR-2-CON-PW-ZA-2890 FF, SDR-2-CON-PW-ZA-2870 FF, SDR-2-CON-PW-ZA-2360 FF, SDR-2-CON-PW-ZA-2440 FF, SDR-2-CON-PW-ZA-2370 FF, SDR-2-CON-PW-ZA-2430 FF, SDR-2-CON-PW-ZA-2450 FF, SDR-2-CON-PW-ZA-2400 FF, SDR-2-CON-PW-ZA-2380 FF, SDR-2-CON-PW-ZA-2410 FF, SDR-2-CON-PW-ZA-2390 FF, SDR-2-CON-PW-ZA-2460 FF, SDR-2-CON-PW-ZA-2540 FF, SDR-2-CON-PW-ZA-2470 FF, SDR-2-CON-PW-ZA-2530 FF, SDR-2-CON-PW-ZA-2500 FF, SDR-2-CON-PW-ZA-2480 FF, SDR-2-CON-PW-ZA-2510 FF, SDR-2-CON-PW-ZA-2490 FF, SDR-2-CON-PW-ZA-2520 FF, SDR-2-CON-PW-ZG-1080 FF, SDR-2-CON-PW-ZG-1510 FF, SDR-2-CON-PW-ZA-3680 FF, SDR-2-CON-PW-ZA-3660 FF, SDR-2-CON-PW-ZA-3690 FF, SDR-2-CON-PW-ZA-3670 FF, SDR-2-CON-PW-ZA-3700 FF, SDR-2-CON-PW-ZA-2930 FF, SDR-2-CON-PW-ZA-2950 FF, SDR-2-CON-PW-ZA-2980 FF, SDR-2-CON-PW-ZA-2960 FF, SDR-2-CON-PW-ZA-2990 FF, SDR-2-CON-PW-ZA-2970 FF, SDR-2-CON-PW-ZA-3030 FF, SDR-2-CON-PW-ZA-3050 FF, SDR-2-CON-PW-ZA-3080 FF, SDR-2-CON-PW-ZA-3060 FF, SDR-2-CON-PW-ZA-3090 FF, SDR-2-CON-PW-ZA-3070 FF, SDR-2-CON-PW-ZA-3100 FF, SDR-2-CON-PW-ZA-3130 FF, SDR-2-CON-PW-ZA-3150 FF, SDR-2-CON-PW-ZA-3180 FF, SDR-2-CON-PW-ZA-3160 FF, SDR-2-CON-PW-ZA-3190 FF, SDR-2-CON-PW-ZA-3170 FF, SDR-2-CON-PW-ZA-3200 FF, SDR-2-CON-PW-ZA-2630 FF, SDR-2-CON-PW-ZA-2650 FF, SDR-2-CON-PW-ZA-2600 FF, SDR-2-CON-PW-ZA-2580 FF, SDR-2-CON-PW-ZA-2610 FF, SDR-2-CON-PW-ZA-2590 FF, SDR-2-CON-PW-ZA-2620 FF, SDR-2-CON-SL-ZA-1110 FF, SDR-2-CON-SL-ZA-1100 FF, SDR-2-CON-SL-ZA-2900 FF, SDR-2-CON-SL-ZA-2890 FF, SDR-2-CON-SL-ZA-1410 FF, SDR-2-CON-SL-ZA-1400 FF, SDR-2-CON-SL-ZA-2980 FF, SDR-2-CON-SL-ZA-2970 FF, SDR-2-CON-SL-ZA-3020 FF, SDR-2-CON-SL-ZA-3010 FF, SDR-2-CON-SL-ZA-3060 FF, SDR-2-CON-SL-ZA-3050 FF, SDR-2-CON-SL-ZA-3100 FF, SDR-2-CON-SL-ZA-3090 FF, SDR-2-CON-SL-ZA-3140 FF, SDR-2-CON-SL-ZA-3130 FF, SDR-2-CON-SL-ZA-3180 FF, SDR-2-CON-SL-ZA-3170 FF, SDR-2-CON-SL-ZA-3220 FF, SDR-2-CON-SL-ZA-3210 FF, SDR-2-CON-SL-ZA-2940 FF, SDR-2-CON-SL-ZA-2930 FF, SDR-2-CON-SL-ZA-2650 FF, SDR-2-CON-SL-ZA-2760 FF, SDR-2-CON-SL-ZA-2770 FF, SDR-2-CON-SL-ZA-2780 FF, SDR-2-CON-SL-ZA-2660 FF, SDR-2-CON-SL-ZA-2790 FF, SDR-2-CON-SL-ZA-2800 FF, SDR-2-CON-SL-ZA-2670 FF, SDR-2-CON-SL-ZA-2810 FF, SDR-2-CON-SL-ZA-2820 FF, SDR-2-CON-SL-ZA-2680 FF, SDR-2-CON-SL-ZA-2830 FF, SDR-2-CON-SL-ZA-2840 FF, SDR-2-CON-SL-ZA-2690 FF, SDR-2-CON-SL-ZA-2850 FF, SDR-2-CON-SL-ZA-2860 FF, SDR-2-CON-MV-ZA-1100 FF, SDR-2-CON-MV-ZA-1190 FF, SDR-2-CON-MV-ZA-1180 FF, SDR-2-CON-MV-ZA-1230 FF, SDR-2-CON-MV-ZA-1220 FF, SDR-2-CON-MV-ZA-1270 FF, SDR-2-CON-MV-ZA-1260 FF, SDR-2-CON-TE-ZA-1040 FF, SDR-2-CON-TE-ZA-1050 FF, SDR-2-CON-TE-ZA-1060 FF, SDR-2-CON-TE-ZA-3280 FF, SDR-2-CON-TE-ZA-3260 FF, SDR-2-CON-TE-ZA-3270 FF, SDR-2-CON-TE-ZA-3310 FF, SDR-2-CON-TE-ZA-3320 FF, SDR-2-CON-TE-ZA-3370 FF, SDR-2-CON-TE-ZA-3380 FF, SDR-2-CON-TE-ZA-3340 FF, SDR-2-CON-TE-ZA-3350 FF, SDR-2-CON-TE-ZA-3360 FF, SDR-2-CON-TE-ZA-3400 FF, SDR-2-CON-TE-ZA-3410 FF, SDR-2-CON-TE-ZA-3460 FF, SDR-2-CON-TE-ZA-3470 FF, SDR-2-CON-TE-ZA-3430 FF, SDR-2-CON-TE-ZA-3440 FF, SDR-2-CON-TE-ZA-3450 FF, SDR-2-CON-TE-ZA-3500 FF, SDR-2-CON-TE-ZA-3550 FF, SDR-2-CON-TE-ZA-3520 FF, SDR-2-CON-TE-ZA-3530 FF, SDR-2-CON-TE-ZA-3540 FF, SDR-2-CON-TE-ZA-3590 FF, SDR-2-CON-TE-ZA-3640 FF, SDR-2-CON-TE-ZA-3610 FF, SDR-2-CON-TE-ZA-3620 FF, SDR-2-CON-TE-ZA-3630 FF, SDR-2-CON-TE-ZA-3680 FF, SDR-2-CON-TE-ZA-3730 FF, SDR-2-CON-TE-ZA-3690 FF, SDR-2-CON-TE-ZA-3740 FF, SDR-2-CON-TE-ZA-3700 FF, SDR-2-CON-TE-ZA-3710 FF, SDR-2-CON-TE-ZA-3720 FF, SDR-2-CON-TE-ZA-3770 FF, SDR-2-CON-TE-ZA-3820 FF, SDR-2-CON-TE-ZA-3780 FF, SDR-2-CON-TE-ZA-3830 FF, SDR-2-CON-TE-ZA-3790 FF, SDR-2-CON-TE-ZA-3800 FF, SDR-2-CON-TE-ZA-3810 FF, SDR-2-CON-TE-ZA-3860 FF, SDR-2-CON-TE-ZA-3910 FF, SDR-2-CON-TE-ZA-3870 FF, SDR-2-CON-TE-ZA-3920 FF, SDR-2-CON-TE-ZA-3880 FF, SDR-2-CON-TE-ZA-3890 FF, SDR-2-CON-TE-ZA-3900 FF, SDR-2-CON-TE-ZA-3940 FF, SDR-2-CON-TE-ZA-3950 FF, SDR-2-CON-TE-ZA-4000 FF, SDR-2-CON-TE-ZA-3960 FF, SDR-2-CON-TE-ZA-4010 FF, SDR-2-CON-TE-ZA-3970 FF, SDR-2-CON-TE-ZA-3980 FF, SDR-2-CON-TE-ZA-3990 FF, SDR-2-CON-TE-ZA-4030 FF, SDR-2-CON-TE-ZA-4040 FF, SDR-2-CON-TE-ZA-4090 FF, SDR-2-CON-TE-ZA-4050 FF, SDR-2-CON-TE-ZA-4100 FF, SDR-2-CON-TE-ZA-4060 FF, SDR-2-CON-TE-ZA-4070 FF, SDR-2-CON-TE-ZA-4080 FF, SDR-2-CON-TE-ZA-4130 FF, SDR-2-CON-TE-ZA-4180 FF, SDR-2-CON-TE-ZA-4160 FF, SDR-2-CON-TE-ZA-4170 FF, SDR-2-CON-SL-ZA-3260 FF, SDR-2-CON-SL-ZA-3250 FF, SDR-2-CON-SL-ZA-3300 FF, SDR-2-CON-SL-ZA-3290 FF, SDR-2-CON-SL-ZA-3340 FF, SDR-2-CON-SL-ZA-3330 FF, SDR-2-CON-SL-ZA-3380 FF, SDR-2-CON-SL-ZA-3370 FF, SDR-2-CON-SL-ZA-3430 FF, SDR-2-CON-SL-ZA-3440 FF, SDR-2-CON-SL-ZA-3450 FF, SDR-2-CON-SL-ZA-3460 FF, SDR-2-CON-SL-ZA-3470 FF, SDR-2-CON-SL-ZA-3480 FF, SDR-2-CON-SL-ZA-3490 FF, SDR-2-CON-SL-ZA-3500 FF, SDR-2-CON-SL-ZA-3510 FF, SDR-2-CON-SL-ZA-3520 FF, SDR-2-CON-SL-ZA-3530 FF, SDR-2-CON-SL-ZA-3540 FF, SDR-2-CON-SL-ZA-3550 FF, SDR-2-CON-SL-ZA-3560 FF, SDR-2-CON-SL-ZA-3570 FF, SDR-2-CON-SL-ZA-3580 FF, SDR-2-CON-MV-ZA-1300 FF, SDR-2-CON-MV-ZA-1340 FF, SDR-2-CON-TE-ZA-4220 FF, SDR-2-CON-TE-ZA-4270 FF, SDR-2-CON-TE-ZA-4260 FF, SDR-2-CON-TE-ZA-4340 FF, SDR-2-CON-TE-ZA-4350 FF, SDR-2-CON-TE-ZA-4430 FF, SDR-2-CON-TE-ZA-4440 FF, SDR-2-CON-TE-ZA-4520 FF, SDR-2-CON-TE-ZA-4530 FF, SDR-2-CON-CC-ZA-1050 FF, SDR-2-CON-CC-ZA-1060 FF, SDR-2-CON-CC-ZA-1100 FF, SDR-2-CON-CC-ZA-1110 FF, SDR-2-CON-CC-ZA-1260 FF, SDR-2-CON-CC-ZA-1270 FF, SDR-2-CON-CC-ZA-1400 FF, SDR-2-CON-CC-ZA-1410 FF, SDR-2-CON-CC-ZA-1500 FF, SDR-2-CON-CC-ZA-1510 FF, SDR-2-CON-CC-ZA-1520 FF, SDR-2-CON-CC-ZA-1530 FF, SDR-2-CON-CC-ZA-1540 FF, SDR-2-CON-CC-ZA-1550 FF, SDR-2-CON-CC-ZA-1560 FF, SDR-2-CON-CC-ZA-1570 FF, SDR-2-CON-CC-ZA-1580 FF, SDR-2-CON-CC-ZA-1590 FF, SDR-2-CON-CC-ZA-1610 FF, SDR-2-CON-CC-ZA-1620 FF, SDR-2-CON-CC-ZA-1630 FF, SDR-2-CON-CC-ZA-1640 FF, SDR-2-CON-CC-ZA-1650 FF, SDR-2-CON-CC-ZA-1660 FF, SDR-2-CON-CC-ZA-1720 FF, SDR-2-CON-CC-ZA-1730 FF, SDR-2-CON-CC-ZA-1760 FF, SDR-2-CON-CC-ZA-1770 FF, SDR-2-CON-CC-ZA-1780 FF, SDR-2-CON-CC-ZA-1800 FF, SDR-2-CON-CC-ZA-1810 FF, SDR-2-CON-CC-ZA-1820 FF, SDR-2-CON-CC-ZA-1840 FF, SDR-2-CON-CC-ZA-1850 FF, SDR-2-CON-CC-ZA-1860 FF, SDR-2-CON-CC-ZG-1500 FF, SDR-2-CON-CC-ZG-1540 FF, SDR-2-CON-CC-ZG-1550 FF, SDR-2-CON-CC-ZG-1510 FF, SDR-2-CON-CC-ZG-1560 FF, SDR-2-CON-CC-ZG-1570 FF, SDR-2-CON-CC-ZG-1580 FF, SDR-2-CON-CC-ZG-1520 FF, SDR-2-CON-CC-ZG-1590 FF, SDR-2-CON-CC-ZG-1530 FF, SDR-2-CON-CC-ZG-1600 FF, SDR-2-CON-CC-ZG-1610 FF, SDR-2-CON-CC-ZG-1620 FF, SDR-2-CON-CC-ZG-1630 FF, SDR-2-CON-CC-ZG-1640 FF, SDR-2-CON-CC-ZG-1650 FF, SDR-2-CON-CC-ZG-1660 FF, SDR-2-CON-SE-ZA-2690 FF, SDR-2-MILS-1050 FF, SDR-2-CON-ST-ZA-5970 FF, SDR-2-CON-SE-ZA-1000, SDR-2-CON-SE-ZA-1420, SDR-2-CON-SE-ZA-1030, SDR-2-CON-SE-ZA-1450, SDR-2-CON-SE-ZA-1460, SDR-2-CON-SE-ZA-1520 → SDR-2-CON-SE-ZA-1490, SDR-2-CON-SE-ZA-1550, SDR-2-CON-SE-ZA-1560, SDR-2-CON-SE-ZA-1620, SDR-2-CON-SE-ZA-1590, SDR-2-CON-SE-ZA-1650, SDR-2-CON-SE-ZA-1660, SDR-2-CON-SE-ZA-1720, SDR-2-CON-SE-ZA-1690, SDR-2-CON-SE-ZA-1750, SDR-2-CON-SE-ZA-1760, SDR-2-CON-SE-ZA-1820, SDR-2-CON-SE-ZA-1790, SDR-2-CON-SE-ZA-1850, SDR-2-CON-SE-ZA-1860, SDR-2-CON-SE-ZA-1920, SDR-2-CON-SE-ZA-1890, SDR-2-CON-SE-ZA-1950, SDR-2-CON-SE-ZA-1960, SDR-2-CON-SE-ZA-2020, SDR-2-CON-SE-ZA-1990, SDR-2-CON-SE-ZA-2050, SDR-2-CON-SE-ZA-2060, SDR-2-CON-SE-ZA-2120, SDR-2-CON-SE-ZA-2070, SDR-2-CON-SE-ZA-2080, SDR-2-CON-SE-ZA-2130, SDR-2-CON-SE-ZA-2090, SDR-2-CON-SE-ZA-2150, SDR-2-CON-SE-ZA-2100, SDR-2-CON-SE-ZA-2140, SDR-2-CON-SE-ZA-2160, SDR-2-CON-SE-ZA-2220, SDR-2-CON-SE-ZA-2170, SDR-2-CON-SE-ZA-2230, SDR-2-CON-SE-ZA-2190, SDR-2-CON-SE-ZA-2250, SDR-2-CON-SE-ZA-2200, SDR-2-CON-SE-ZA-2240, SDR-2-CON-SE-ZA-2260, SDR-2-CON-SE-ZA-2320, SDR-2-CON-SE-ZA-2270, SDR-2-CON-SE-ZA-2280, SDR-2-CON-SE-ZA-2330, SDR-2-CON-SE-ZA-2290, SDR-2-CON-SE-ZA-2350, SDR-2-CON-SE-ZA-2300, SDR-2-CON-SE-ZA-2340, SDR-2-CON-SE-ZA-2360, SDR-2-CON-SE-ZA-2420, SDR-2-CON-SE-ZA-2370, SDR-2-CON-SE-ZA-2380, SDR-2-CON-SE-ZA-2430, SDR-2-CON-SE-ZA-2390, SDR-2-CON-SE-ZA-2450, SDR-2-CON-SE-ZA-2400, SDR-2-CON-SE-ZA-2440, SDR-2-CON-PW-ZG-1000, SDR-2-CON-PW-ZA-2910, SDR-2-CON-PW-ZA-3010, SDR-2-CON-PW-ZA-3020, SDR-2-CON-PW-ZA-3110, SDR-2-CON-PW-ZA-3120, SDR-2-CON-PW-ZA-2560, SDR-2-CON-TE-ZA-4290, SDR-2-CON-RW-ZA-1720, SDR-2-CON-RW-ZA-1720 FF, SDR-2-CON-ST-ZA-6120, SDR-2-CON-SE-ZA-1010 FF, SDR-2-CON-SE-ZA-1020 FF, SDR-2-CON-SE-ZA-1040 FF, SDR-2-CON-SE-ZA-1050 FF, SDR-2-CON-SE-ZA-1470 FF, SDR-2-CON-SE-ZA-1480 FF, SDR-2-CON-SE-ZA-1500 FF, SDR-2-CON-SE-ZA-1510 FF, SDR-2-CON-SE-ZA-1570 FF, SDR-2-CON-SE-ZA-1580 FF, SDR-2-CON-SE-ZA-1600 FF, SDR-2-CON-SE-ZA-1610 FF, SDR-2-CON-SE-ZA-1670 FF, SDR-2-CON-SE-ZA-1680 FF, SDR-2-CON-SE-ZA-1700 FF, SDR-2-CON-SE-ZA-1710 FF, SDR-2-CON-SE-ZA-1770 FF, SDR-2-CON-SE-ZA-1780 FF, SDR-2-CON-SE-ZA-1800 FF, SDR-2-CON-SE-ZA-1810 FF, SDR-2-CON-SE-ZA-1870 FF, SDR-2-CON-SE-ZA-1880 FF, SDR-2-CON-SE-ZA-1900 FF, SDR-2-CON-SE-ZA-1910 FF, SDR-2-CON-SE-ZA-1970 FF, SDR-2-CON-SE-ZA-2000 FF, SDR-2-CON-SE-ZA-2110 FF, SDR-2-CON-SE-ZA-2180 FF, SDR-2-CON-SE-ZA-2210 FF, SDR-2-CON-SE-ZA-2310 FF, SDR-2-CON-SE-ZA-2410 FF, SDR-2-CON-TS-ZA-3100 FF, SDR-2-CON-TS-ZA-3130 FF, SDR-2-CON-TS-ZA-3110 FF, SDR-2-CON-TS-ZA-3120 FF, SDR-2-CON-TS-ZA-3140 FF, SDR-2-CON-TS-ZA-2300 FF, SDR-2-CON-TS-ZA-2380 FF, SDR-2-CON-TS-ZA-2310 FF, SDR-2-CON-TS-ZA-2400 FF, SDR-2-CON-TS-ZA-2900 FF, SDR-2-CON-TS-ZA-3000 FF, SDR-2-CON-TS-ZA-2500 FF, SDR-2-CON-PW-ZA-1000 FF, SDR-2-CON-PW-ZA-2200 FF, SDR-2-CON-PW-ZA-1010 FF, SDR-2-CON-PW-ZA-2260 FF, SDR-2-CON-PW-ZA-2340 FF, SDR-2-CON-PW-ZA-2270 FF, SDR-2-CON-PW-ZA-2330 FF, SDR-2-CON-PW-ZA-2350 FF, SDR-2-CON-PW-ZG-1500 FF, SDR-2-CON-PW-ZG-1010 FF, SDR-2-CON-PW-ZA-2940 FF, SDR-2-CON-PW-ZA-2920 FF, SDR-2-CON-PW-ZA-3040 FF, SDR-2-CON-PW-ZA-3140 FF, SDR-2-CON-PW-ZA-2640 FF, SDR-2-CON-PW-ZA-2570 FF, SDR-2-CON-SL-ZA-1000 FF, SDR-2-CON-SL-ZA-2870 FF, SDR-2-CON-SL-ZA-2880 FF, SDR-2-CON-SL-ZA-1300 FF, SDR-2-CON-SL-ZA-1310 FF, SDR-2-CON-SL-ZA-2950 FF, SDR-2-CON-SL-ZA-2960 FF, SDR-2-CON-SL-ZA-2990 FF, SDR-2-CON-SL-ZA-3000 FF, SDR-2-CON-SL-ZA-3030 FF, SDR-2-CON-SL-ZA-3040 FF, SDR-2-CON-SL-ZA-3070 FF, SDR-2-CON-SL-ZA-3080 FF, SDR-2-CON-SL-ZA-3110 FF, SDR-2-CON-SL-ZA-3120 FF, SDR-2-CON-SL-ZA-3150 FF, SDR-2-CON-SL-ZA-3160 FF, SDR-2-CON-SL-ZA-3190 FF, SDR-2-CON-SL-ZA-3200 FF, SDR-2-CON-SL-ZA-2910 FF, SDR-2-CON-SL-ZA-2920 FF, SDR-2-CON-MV-ZA-1000 FF, SDR-2-CON-MV-ZA-1070 FF, SDR-2-CON-MV-ZA-1150 FF, SDR-2-CON-MV-ZA-1160 FF, SDR-2-CON-MV-ZA-1170 FF, SDR-2-CON-MV-ZA-1200 FF, SDR-2-CON-MV-ZA-1210 FF, SDR-2-CON-MV-ZA-1240 FF, SDR-2-CON-MV-ZA-1250 FF, SDR-2-CON-TE-ZA-1030 FF, SDR-2-CON-TE-ZA-1850 FF, SDR-2-CON-TE-ZA-3210 FF, SDR-2-CON-TE-ZA-3220 FF, SDR-2-CON-TE-ZA-3230 FF, SDR-2-CON-TE-ZA-3240 FF, SDR-2-CON-TE-ZA-3290 FF, SDR-2-CON-TE-ZA-3250 FF, SDR-2-CON-TE-ZA-3300 FF, SDR-2-CON-TE-ZA-3330 FF, SDR-2-CON-TE-ZA-3390 FF, SDR-2-CON-TE-ZA-3420 FF, SDR-2-CON-TE-ZA-3480 FF, SDR-2-CON-TE-ZA-3490 FF, SDR-2-CON-TE-ZA-3510 FF, SDR-2-CON-TE-ZA-3560 FF, SDR-2-CON-TE-ZA-3570 FF, SDR-2-CON-TE-ZA-3580 FF, SDR-2-CON-TE-ZA-3600 FF, SDR-2-CON-TE-ZA-3650 FF, SDR-2-CON-TE-ZA-3660 FF, SDR-2-CON-TE-ZA-3670 FF, SDR-2-CON-TE-ZA-3750 FF, SDR-2-CON-TE-ZA-3760 FF, SDR-2-CON-TE-ZA-3840 FF, SDR-2-CON-TE-ZA-3850 FF, SDR-2-CON-TE-ZA-3930 FF, SDR-2-CON-TE-ZA-4020 FF, SDR-2-CON-TE-ZA-4110 FF, SDR-2-CON-TE-ZA-4120 FF, SDR-2-CON-TE-ZA-4140 FF, SDR-2-CON-TE-ZA-4190 FF, SDR-2-CON-TE-ZA-4150 FF, SDR-2-CON-SL-ZA-3230 FF, SDR-2-CON-SL-ZA-3240 FF, SDR-2-CON-SL-ZA-3270 FF, SDR-2-CON-SL-ZA-3280 FF, SDR-2-CON-SL-ZA-3310 FF, SDR-2-CON-SL-ZA-3320 FF, SDR-2-CON-SL-ZA-3350 FF, SDR-2-CON-SL-ZA-3360 FF, SDR-2-CON-SL-ZA-3390 FF, SDR-2-CON-SL-ZA-3400 FF, SDR-2-CON-SL-ZA-3420 FF, SDR-2-CON-SL-ZA-3410 FF, SDR-2-CON-MV-ZA-1280 FF, SDR-2-CON-MV-ZA-1290 FF, SDR-2-CON-MV-ZA-1310 FF, SDR-2-CON-MV-ZA-1320 FF, SDR-2-CON-MV-ZA-1330 FF, SDR-2-CON-MV-ZA-1350 FF, SDR-2-CON-TE-ZA-4200 FF, SDR-2-CON-TE-ZA-4210 FF, SDR-2-CON-TE-ZA-4230 FF, SDR-2-CON-TE-ZA-4280 FF, SDR-2-CON-TE-ZA-4240 FF, SDR-2-CON-TE-ZA-4250 FF, SDR-2-CON-TE-ZA-4300 FF, SDR-2-CON-TE-ZA-4310 FF, SDR-2-CON-TE-ZA-4360 FF, SDR-2-CON-TE-ZA-4320 FF, SDR-2-CON-TE-ZA-4370 FF, SDR-2-CON-TE-ZA-4330 FF, SDR-2-CON-TE-ZA-4380 FF, SDR-2-CON-TE-ZA-4390 FF, SDR-2-CON-TE-ZA-4400 FF, SDR-2-CON-TE-ZA-4450 FF, SDR-2-CON-TE-ZA-4410 FF, SDR-2-CON-TE-ZA-4460 FF, SDR-2-CON-TE-ZA-4420 FF, SDR-2-CON-TE-ZA-4470 FF, SDR-2-CON-TE-ZA-4480 FF, SDR-2-CON-TE-ZA-4490 FF, SDR-2-CON-TE-ZA-4540 FF, SDR-2-CON-TE-ZA-4500 FF, SDR-2-CON-TE-ZA-4550 FF, SDR-2-CON-TE-ZA-4510 FF, SDR-2-CON-CC-ZA-1000 FF, SDR-2-CON-CC-ZA-1030 FF, SDR-2-CON-CC-ZA-1080 FF, SDR-2-CON-CC-ZA-1090 FF, SDR-2-CON-CC-ZA-1240 FF, SDR-2-CON-CC-ZA-1250 FF, SDR-2-CON-CC-ZA-1380 FF, SDR-2-CON-CC-ZA-1390 FF, SDR-2-CON-CC-ZA-1670 FF, SDR-2-CON-CC-ZA-1700 FF, SDR-2-CON-CC-ZA-1750 FF, SDR-2-CON-CC-ZA-1790 FF, SDR-2-CON-CC-ZA-1830 FF, SDR-2-CON-ST-ZA-4020 FF, SDR-2-CON-SE-ZA-1430 FF, SDR-2-CON-SE-ZA-1440 FF, SDR-2-CON-SE-ZA-1530 FF, SDR-2-CON-SE-ZA-1540 FF, SDR-2-CON-SE-ZA-1630 FF, SDR-2-CON-SE-ZA-1730 FF, SDR-2-CON-SE-ZA-1740 FF, SDR-2-CON-SE-ZA-1830 FF, SDR-2-CON-SE-ZA-1840 FF, SDR-2-CON-SE-ZA-1930 FF, SDR-2-CON-SE-ZA-1940 FF, SDR-2-CON-SE-ZA-1980 FF, SDR-2-CON-SE-ZA-2030 FF, SDR-2-CON-SE-ZA-2010 FF, SDR-2-CON-SE-ZA-2040 FF, SDR-2-CON-TS-ZA-1900 FF, SDR-2-CON-TS-ZA-1010 FF, SDR-2-CON-TS-ZA-1080 FF, SDR-2-CON-TS-ZA-1910 FF, SDR-2-CON-TS-ZA-1040 FF, SDR-2-CON-TS-ZA-1020 FF, SDR-2-CON-TS-ZA-1050 FF, SDR-2-CON-TS-ZA-1060 FF, SDR-2-CON-TS-ZA-1070 FF, SDR-2-CON-TS-ZA-2200 FF, SDR-2-CON-TS-ZA-2280 FF, SDR-2-CON-TS-ZA-2210 FF, SDR-2-CON-TS-ZA-2270 FF, SDR-2-CON-TS-ZA-2290 FF, SDR-2-CON-TS-ZA-2230 FF, SDR-2-CON-TS-ZA-2240 FF, SDR-2-CON-TS-ZA-2250 FF, SDR-2-CON-TS-ZA-2260 FF, SDR-2-CON-TS-ZA-1180 FF, SDR-2-CON-TS-ZA-1920 FF, SDR-2-CON-TS-ZA-1190 FF, SDR-2-CON-TS-ZA-1260 FF, SDR-2-CON-TS-ZA-1930 FF, SDR-2-CON-TS-ZA-2010 FF, SDR-2-CON-TS-ZA-2000 FF, SDR-2-CON-TS-ZA-2020 FF, SDR-2-CON-TS-ZA-2030 FF, SDR-2-CON-TS-ZA-2040 FF, SDR-2-CON-TS-ZA-1270 FF, SDR-2-CON-TS-ZA-1940 FF, SDR-2-CON-TS-ZA-1280 FF, SDR-2-CON-TS-ZA-1350 FF, SDR-2-CON-TS-ZA-1950 FF, SDR-2-CON-TS-ZA-2060 FF, SDR-2-CON-TS-ZA-2050 FF, SDR-2-CON-TS-ZA-2070 FF, SDR-2-CON-TS-ZA-2080 FF, SDR-2-CON-TS-ZA-2090 FF, SDR-2-CON-TS-ZA-2660 FF, SDR-2-CON-TS-ZA-2650 FF, SDR-2-CON-TS-ZA-2670 FF, SDR-2-CON-TS-ZA-2680 FF, SDR-2-CON-TS-ZA-2690 FF, SDR-2-CON-TS-ZA-2700 FF, SDR-2-CON-TS-ZA-2730 FF, SDR-2-CON-TS-ZA-2710 FF, SDR-2-CON-TS-ZA-2720 FF, SDR-2-CON-TS-ZA-2740 FF, SDR-2-CON-TS-ZA-2760 FF, SDR-2-CON-TS-ZA-2750 FF, SDR-2-CON-TS-ZA-2770 FF, SDR-2-CON-TS-ZA-2780 FF, SDR-2-CON-TS-ZA-2800 FF, SDR-2-CON-TS-ZA-2830 FF, SDR-2-CON-TS-ZA-2810 FF, SDR-2-CON-TS-ZA-2820 FF, SDR-2-CON-TS-ZA-2840 FF, SDR-2-CON-TS-ZA-2860 FF, SDR-2-CON-TS-ZA-2850 FF, SDR-2-CON-TS-ZA-2870 FF, SDR-2-CON-TS-ZA-2880 FF, SDR-2-CON-TS-ZA-2890 FF, SDR-2-CON-TS-ZA-1630 FF, SDR-2-CON-TS-ZA-1960 FF, SDR-2-CON-TS-ZA-1640 FF, SDR-2-CON-TS-ZA-1710 FF, SDR-2-CON-TS-ZA-1970 FF, SDR-2-CON-TS-ZA-2110 FF, SDR-2-CON-TS-ZA-2100 FF, SDR-2-CON-TS-ZA-2120 FF, SDR-2-CON-TS-ZA-2130 FF, SDR-2-CON-TS-ZA-2140 FF, SDR-2-CON-TS-ZA-1720 FF, SDR-2-CON-TS-ZA-1980 FF, SDR-2-CON-TS-ZA-1730 FF, SDR-2-CON-TS-ZA-1800 FF, SDR-2-CON-TS-ZA-1990 FF, SDR-2-CON-TS-ZA-2160 FF, SDR-2-CON-TS-ZA-2150 FF, SDR-2-CON-TS-ZA-2170 FF, SDR-2-CON-TS-ZA-2180 FF, SDR-2-CON-TS-ZA-2190 FF, SDR-2-CON-TS-ZA-3160 FF, SDR-2-CON-TS-ZA-3150 FF, SDR-2-CON-TS-ZA-3170 FF, SDR-2-CON-TS-ZA-3180 FF, SDR-2-CON-TS-ZA-3190 FF, SDR-2-CON-TS-ZA-2370 FF, SDR-2-CON-TS-ZA-2390 FF, SDR-2-CON-TS-ZA-2330 FF, SDR-2-CON-TS-ZA-2320 FF, SDR-2-CON-TS-ZA-2340 FF, SDR-2-CON-TS-ZA-2350 FF, SDR-2-CON-TS-ZA-2360 FF, SDR-2-CON-TS-ZA-2430 FF, SDR-2-CON-TS-ZA-2410 FF, SDR-2-CON-TS-ZA-2420 FF, SDR-2-CON-TS-ZA-2440 FF, SDR-2-CON-TS-ZA-2460 FF, SDR-2-CON-TS-ZA-2450 FF, SDR-2-CON-TS-ZA-2930 FF, SDR-2-CON-TS-ZA-2910 FF, SDR-2-CON-TS-ZA-2920 FF, SDR-2-CON-TS-ZA-2940 FF, SDR-2-CON-TS-ZA-2960 FF, SDR-2-CON-TS-ZA-2950 FF, SDR-2-CON-TS-ZA-2970 FF, SDR-2-CON-TS-ZA-2980 FF, SDR-2-CON-TS-ZA-2990 FF, SDR-2-CON-TS-ZA-3030 FF, SDR-2-CON-TS-ZA-3010 FF, SDR-2-CON-TS-ZA-3020 FF, SDR-2-CON-TS-ZA-3040 FF, SDR-2-CON-TS-ZA-3060 FF, SDR-2-CON-TS-ZA-3050 FF, SDR-2-CON-TS-ZA-2510 FF, SDR-2-CON-TS-ZA-2520 FF, SDR-2-CON-TS-ZA-2560 FF, SDR-2-CON-TS-ZA-2550 FF, SDR-2-CON-TS-ZA-2570 FF, SDR-2-CON-TS-ZA-2580 FF, SDR-2-CON-TS-ZA-2590 FF, SDR-2-CON-PW-ZA-1080 FF, SDR-2-CON-PW-ZA-2210 FF, SDR-2-CON-PW-ZA-1040 FF, SDR-2-CON-PW-ZA-1020 FF, SDR-2-CON-PW-ZA-1050 FF, SDR-2-CON-PW-ZA-2300 FF, SDR-2-CON-PW-ZA-2280 FF, SDR-2-CON-PW-ZA-2310 FF, SDR-2-CON-PW-ZA-2290 FF, SDR-2-CON-PW-ZA-2680 FF, SDR-2-CON-PW-ZA-2660 FF, SDR-2-CON-PW-ZA-2690 FF, SDR-2-CON-PW-ZA-2670 FF, SDR-2-CON-PW-ZA-2710 FF, SDR-2-CON-PW-ZA-2780 FF, SDR-2-CON-PW-ZA-2760 FF, SDR-2-CON-PW-ZA-2790 FF, SDR-2-CON-PW-ZA-2770 FF, SDR-2-CON-PW-ZA-2800 FF, SDR-2-CON-PW-ZA-1400 FF, SDR-2-CON-PW-ZA-2240 FF, SDR-2-CON-PW-ZA-1410 FF, SDR-2-CON-PW-ZA-1480 FF, SDR-2-CON-PW-ZA-2250 FF, SDR-2-CON-PW-ZA-3230 FF, SDR-2-CON-PW-ZA-3210 FF, SDR-2-CON-PW-ZA-3240 FF, SDR-2-CON-PW-ZA-3260 FF, SDR-2-CON-PW-ZA-3290 FF, SDR-2-CON-PW-ZA-3270 FF, SDR-2-CON-PW-ZA-3280 FF, SDR-2-CON-PW-ZA-3360 FF, SDR-2-CON-PW-ZA-3390 FF, SDR-2-CON-PW-ZA-3370 FF, SDR-2-CON-PW-ZA-3380 FF, SDR-2-CON-PW-ZA-3400 FF, SDR-2-CON-PW-ZA-3460 FF, SDR-2-CON-PW-ZA-3490 FF, SDR-2-CON-PW-ZA-3470 FF, SDR-2-CON-PW-ZA-3480 FF, SDR-2-CON-PW-ZA-3500 FF, SDR-2-CON-PW-ZA-2810 FF, SDR-2-CON-PW-ZA-2840 FF, SDR-2-CON-PW-ZA-2820 FF, SDR-2-CON-PW-ZA-2830 FF, SDR-2-CON-PW-ZA-2880 FF, SDR-2-CON-PW-ZA-2860 FF, SDR-2-CON-PW-ZA-2890 FF, SDR-2-CON-PW-ZA-2870 FF, SDR-2-CON-PW-ZA-2360 FF, SDR-2-CON-PW-ZA-2440 FF, SDR-2-CON-PW-ZA-2370 FF, SDR-2-CON-PW-ZA-2430 FF, SDR-2-CON-PW-ZA-2450 FF, SDR-2-CON-PW-ZA-2400 FF, SDR-2-CON-PW-ZA-2380 FF, SDR-2-CON-PW-ZA-2410 FF, SDR-2-CON-PW-ZA-2390 FF, SDR-2-CON-PW-ZA-2460 FF, SDR-2-CON-PW-ZA-2540 FF, SDR-2-CON-PW-ZA-2470 FF, SDR-2-CON-PW-ZA-2530 FF, SDR-2-CON-PW-ZA-2500 FF, SDR-2-CON-PW-ZA-2480 FF, SDR-2-CON-PW-ZA-2510 FF, SDR-2-CON-PW-ZA-2490 FF, SDR-2-CON-PW-ZG-1080 FF, SDR-2-CON-PW-ZG-1510 FF, SDR-2-CON-PW-ZA-3680 FF, SDR-2-CON-PW-ZA-3660 FF, SDR-2-CON-PW-ZA-3690 FF, SDR-2-CON-PW-ZA-3670 FF, SDR-2-CON-PW-ZA-3700 FF, SDR-2-CON-PW-ZA-2930 FF, SDR-2-CON-PW-ZA-2950 FF, SDR-2-CON-PW-ZA-2980 FF, SDR-2-CON-PW-ZA-2960 FF, SDR-2-CON-PW-ZA-2990 FF, SDR-2-CON-PW-ZA-2970 FF, SDR-2-CON-PW-ZA-3030 FF, SDR-2-CON-PW-ZA-3050 FF, SDR-2-CON-PW-ZA-3080 FF, SDR-2-CON-PW-ZA-3060 FF, SDR-2-CON-PW-ZA-3090 FF, SDR-2-CON-PW-ZA-3070 FF, SDR-2-CON-PW-ZA-3100 FF, SDR-2-CON-PW-ZA-3130 FF, SDR-2-CON-PW-ZA-3150 FF, SDR-2-CON-PW-ZA-3180 FF, SDR-2-CON-PW-ZA-3160 FF, SDR-2-CON-PW-ZA-3190 FF, SDR-2-CON-PW-ZA-3170 FF, SDR-2-CON-PW-ZA-3200 FF, SDR-2-CON-PW-ZA-2630 FF, SDR-2-CON-PW-ZA-2650 FF, SDR-2-CON-PW-ZA-2600 FF, SDR-2-CON-PW-ZA-2580 FF, SDR-2-CON-PW-ZA-2610 FF, SDR-2-CON-PW-ZA-2590 FF, SDR-2-CON-PW-ZA-2620 FF, SDR-2-CON-SL-ZA-2900 FF, SDR-2-CON-SL-ZA-2890 FF, SDR-2-CON-SL-ZA-1410 FF, SDR-2-CON-SL-ZA-1400 FF, SDR-2-CON-SL-ZA-2980 FF, SDR-2-CON-SL-ZA-2970 FF, SDR-2-CON-SL-ZA-3020 FF, SDR-2-CON-SL-ZA-3010 FF, SDR-2-CON-SL-ZA-3060 FF, SDR-2-CON-SL-ZA-3050 FF, SDR-2-CON-SL-ZA-3100 FF, SDR-2-CON-SL-ZA-3090 FF, SDR-2-CON-SL-ZA-3140 FF, SDR-2-CON-SL-ZA-3130 FF, SDR-2-CON-SL-ZA-3180 FF, SDR-2-CON-SL-ZA-3170 FF, SDR-2-CON-SL-ZA-3220 FF, SDR-2-CON-SL-ZA-3210 FF, SDR-2-CON-SL-ZA-2940 FF, SDR-2-CON-SL-ZA-2930 FF, SDR-2-CON-SL-ZA-2650 FF, SDR-2-CON-SL-ZA-2660 FF, SDR-2-CON-SL-ZA-2800 FF, SDR-2-CON-SL-ZA-2670 FF, SDR-2-CON-SL-ZA-2810 FF, SDR-2-CON-SL-ZA-2820 FF, SDR-2-CON-SL-ZA-2830 FF, SDR-2-CON-SL-ZA-2840 FF, SDR-2-CON-SL-ZA-2850 FF, SDR-2-CON-SL-ZA-2860 FF, SDR-2-CON-MV-ZA-1100 FF, SDR-2-CON-MV-ZA-1190 FF, SDR-2-CON-MV-ZA-1180 FF, SDR-2-CON-MV-ZA-1230 FF, SDR-2-CON-MV-ZA-1220 FF, SDR-2-CON-MV-ZA-1270 FF, SDR-2-CON-MV-ZA-1260 FF, SDR-2-CON-TE-ZA-1040 FF, SDR-2-CON-TE-ZA-1050 FF, SDR-2-CON-TE-ZA-1060 FF, SDR-2-CON-TE-ZA-3280 FF, SDR-2-CON-TE-ZA-3260 FF, SDR-2-CON-TE-ZA-3270 FF, SDR-2-CON-TE-ZA-3310 FF, SDR-2-CON-TE-ZA-3320 FF, SDR-2-CON-TE-ZA-3370 FF, SDR-2-CON-TE-ZA-3380 FF, SDR-2-CON-TE-ZA-3340 FF, SDR-2-CON-TE-ZA-3350 FF, SDR-2-CON-TE-ZA-3360 FF, SDR-2-CON-TE-ZA-3400 FF, SDR-2-CON-TE-ZA-3410 FF, SDR-2-CON-TE-ZA-3460 FF, SDR-2-CON-TE-ZA-3470 FF, SDR-2-CON-TE-ZA-3430 FF, SDR-2-CON-TE-ZA-3440 FF, SDR-2-CON-TE-ZA-3450 FF, SDR-2-CON-TE-ZA-3500 FF, SDR-2-CON-TE-ZA-3550 FF, SDR-2-CON-TE-ZA-3520 FF, SDR-2-CON-TE-ZA-3530 FF, SDR-2-CON-TE-ZA-3540 FF, SDR-2-CON-TE-ZA-3590 FF, SDR-2-CON-TE-ZA-3640 FF, SDR-2-CON-TE-ZA-3610 FF, SDR-2-CON-TE-ZA-3620 FF, SDR-2-CON-TE-ZA-3630 FF, SDR-2-CON-TE-ZA-3680 FF, SDR-2-CON-TE-ZA-3730 FF, SDR-2-CON-TE-ZA-3690 FF, SDR-2-CON-TE-ZA-3740 FF, SDR-2-CON-TE-ZA-3700 FF, SDR-2-CON-TE-ZA-3710 FF, SDR-2-CON-TE-ZA-3720 FF, SDR-2-CON-TE-ZA-3770 FF, SDR-2-CON-TE-ZA-3820 FF, SDR-2-CON-TE-ZA-3780 FF, SDR-2-CON-TE-ZA-3830 FF, SDR-2-CON-TE-ZA-3790 FF, SDR-2-CON-TE-ZA-3800 FF, SDR-2-CON-TE-ZA-3810 FF, SDR-2-CON-TE-ZA-3860 FF, SDR-2-CON-TE-ZA-3910 FF, SDR-2-CON-TE-ZA-3870 FF, SDR-2-CON-TE-ZA-3920 FF, SDR-2-CON-TE-ZA-3880 FF, SDR-2-CON-TE-ZA-3890 FF, SDR-2-CON-TE-ZA-3900 FF, SDR-2-CON-TE-ZA-3940 FF, SDR-2-CON-TE-ZA-3950 FF, SDR-2-CON-TE-ZA-4000 FF, SDR-2-CON-TE-ZA-3960 FF, SDR-2-CON-TE-ZA-4010 FF, SDR-2-CON-TE-ZA-3970 FF, SDR-2-CON-TE-ZA-3980 FF, SDR-2-CON-TE-ZA-3990 FF, SDR-2-CON-TE-ZA-4030 FF, SDR-2-CON-TE-ZA-4040 FF, SDR-2-CON-TE-ZA-4090 FF, SDR-2-CON-TE-ZA-4050 FF, SDR-2-CON-TE-ZA-4100 FF, SDR-2-CON-TE-ZA-4060 FF, SDR-2-CON-TE-ZA-4070 FF, SDR-2-CON-TE-ZA-4080 FF, SDR-2-CON-TE-ZA-4130 FF, SDR-2-CON-TE-ZA-4180 FF, SDR-2-CON-TE-ZA-4160 FF, SDR-2-CON-TE-ZA-4170 FF, SDR-2-CON-SL-ZA-3260 FF, SDR-2-CON-SL-ZA-3250 FF, SDR-2-CON-SL-ZA-3300 FF, SDR-2-CON-SL-ZA-3290 FF, SDR-2-CON-SL-ZA-3340 FF, SDR-2-CON-SL-ZA-3330 FF, SDR-2-CON-SL-ZA-3380 FF, SDR-2-CON-SL-ZA-3370 FF, SDR-2-CON-SL-ZA-3430 FF, SDR-2-CON-SL-ZA-3440 FF, SDR-2-CON-SL-ZA-3450 FF, SDR-2-CON-SL-ZA-3460 FF, SDR-2-CON-SL-ZA-3470 FF, SDR-2-CON-SL-ZA-3480 FF, SDR-2-CON-SL-ZA-3490 FF, SDR-2-CON-SL-ZA-3500 FF, SDR-2-CON-SL-ZA-3510 FF, SDR-2-CON-SL-ZA-3520 FF, SDR-2-CON-SL-ZA-3530 FF, SDR-2-CON-SL-ZA-3540 FF, SDR-2-CON-SL-ZA-3550 FF, SDR-2-CON-MV-ZA-1300 FF, SDR-2-CON-MV-ZA-1340 FF, SDR-2-CON-TE-ZA-4220 FF, SDR-2-CON-TE-ZA-4270 FF, SDR-2-CON-TE-ZA-4260 FF, SDR-2-CON-TE-ZA-4340 FF, SDR-2-CON-TE-ZA-4350 FF, SDR-2-CON-TE-ZA-4430 FF, SDR-2-CON-TE-ZA-4440 FF, SDR-2-CON-TE-ZA-4520 FF, SDR-2-CON-TE-ZA-4530 FF, SDR-2-CON-CC-ZA-1050 FF, SDR-2-CON-CC-ZA-1060 FF, SDR-2-CON-CC-ZA-1260 FF, SDR-2-CON-CC-ZA-1270 FF, SDR-2-CON-CC-ZA-1500 FF, SDR-2-CON-CC-ZA-1510 FF, SDR-2-CON-CC-ZA-1520 FF, SDR-2-CON-CC-ZA-1530 FF, SDR-2-CON-CC-ZA-1540 FF, SDR-2-CON-CC-ZA-1550 FF, SDR-2-CON-CC-ZA-1560 FF, SDR-2-CON-CC-ZA-1570 FF, SDR-2-CON-CC-ZA-1580 FF, SDR-2-CON-CC-ZA-1590 FF, SDR-2-CON-CC-ZA-1610 FF, SDR-2-CON-CC-ZA-1620 FF, SDR-2-CON-CC-ZA-1630 FF, SDR-2-CON-CC-ZA-1640 FF, SDR-2-CON-CC-ZA-1650 FF, SDR-2-CON-CC-ZA-1660 FF, SDR-2-CON-CC-ZA-1720 FF, SDR-2-CON-CC-ZA-1730 FF, SDR-2-CON-CC-ZA-1760 FF, SDR-2-CON-CC-ZA-1770 FF, SDR-2-CON-CC-ZA-1780 FF, SDR-2-CON-CC-ZA-1800 FF, SDR-2-CON-CC-ZA-1810 FF, SDR-2-CON-CC-ZA-1820 FF, SDR-2-CON-CC-ZA-1840 FF, SDR-2-CON-CC-ZA-1850 FF, SDR-2-CON-CC-ZA-1860 FF, SDR-2-CON-CC-ZG-1500 FF, SDR-2-CON-CC-ZG-1540 FF, SDR-2-CON-CC-ZG-1550 FF, SDR-2-CON-CC-ZG-1510 FF, SDR-2-CON-CC-ZG-1560 FF, SDR-2-CON-CC-ZG-1570 FF, SDR-2-CON-CC-ZG-1580 FF, SDR-2-CON-CC-ZG-1520 FF, SDR-2-CON-CC-ZG-1590 FF, SDR-2-CON-CC-ZG-1530 FF, SDR-2-CON-CC-ZG-1600 FF, SDR-2-CON-CC-ZG-1610 FF, SDR-2-CON-CC-ZG-1620 FF, SDR-2-CON-CC-ZG-1630 FF, SDR-2-CON-CC-ZG-1640 FF, SDR-2-CON-CC-ZG-1650 FF, SDR-2-CON-SE-ZA-2690 FF, SDR-2-MILS-1050 FF, SDR-2-CON-ST-ZA-5970 FF, SDR-2-CON-SE-ZA-1000, SDR-2-CON-SE-ZA-1420, SDR-2-CON-SE-ZA-1030, SDR-2-CON-SE-ZA-1450, SDR-2-CON-SE-ZA-1460, SDR-2-CON-SE-ZA-1520 |
| 8 | **install** | 2027-06-01 → 2027-06-05 (+4d) | 2027-06-15 → 2027-06-19 (+4d) |  |  |
| SDR-2-CON-IR-ZA-1010 | Installation of HDPE Pipe | 2027-06-01 → 2027-06-05 (+4d) | 2027-06-15 → 2027-06-19 (+4d) | 3d → 0d | SDR-2-TC-PW-1050 SS, SDR-2-TC-TSE-1040 SS, SDR-2-CON-PW-ZA-3500, SDR-2-CON-PW-ZA-3600, SDR-2-CON-PW-ZA-2850, SDR-2-CON-PW-ZA-2450, SDR-2-CON-PW-ZA-2550, SDR-2-CON-PW-ZG-1510, SDR-2-CON-PW-ZA-2950, SDR-2-CON-PW-ZA-3050, SDR-2-CON-PW-ZA-3150, SDR-2-CON-IR-ZA-1000 → SDR-2-TC-PW-1050 SS, SDR-2-CON-PW-ZA-3500, SDR-2-CON-PW-ZA-3600, SDR-2-CON-PW-ZA-2850, SDR-2-CON-PW-ZA-2450, SDR-2-CON-PW-ZA-2550, SDR-2-CON-PW-ZG-1510, SDR-2-CON-PW-ZA-2950, SDR-2-CON-PW-ZA-3050, SDR-2-CON-PW-ZA-3150, SDR-2-CON-IR-ZA-1000 |
| 9 | **Finishing** | 2027-06-16 → 2027-06-20 (+4d) | 2027-06-27 → 2027-06-30 (+3d) |  |  |
| SDR-2-CON-IR-ZA-1020 | Finishing Works for irrigation | 2027-06-16 → 2027-06-20 (+4d) | 2027-06-27 → 2027-06-30 (+3d) | 3d → 0d |  |
| 10 | **Repairs** | 2027-06-28 → 2027-07-01 (+3d) | 2027-07-01 → 2027-07-05 (+4d) |  |  |
| SDR-2-CON-IR-ZA-1030 | Repair for irrigation Works | 2027-06-28 → 2027-07-01 (+3d) | 2027-07-01 → 2027-07-05 (+4d) | 3d → 0d |  |
| 2 | **IRRIGATION WORKS IN ( PH2-COL-MC20 )** | 2027-05-06 → 2027-05-05 (-1d) | 2027-06-23 → 2027-06-21 (-2d) |  |  |
| 7 | **Pre install** | 2027-05-06 → 2027-05-05 (-1d) | 2027-06-05 → 2027-06-02 (-3d) |  |  |
| SDR-2-CON-IR-ZA-2120 | Pre Install for irrigation Works | 2027-05-06 → 2027-05-05 (-1d) | 2027-06-05 → 2027-06-02 (-3d) | 9.74d → 11d |  |
| 8 | **install** | 2027-05-24 → 2027-05-23 (-1d) | 2027-06-07 → 2027-06-05 (-2d) |  |  |
| SDR-2-CON-IR-ZA-2130 | Installation of HDPE Pipe | 2027-05-24 → 2027-05-23 (-1d) | 2027-06-07 → 2027-06-05 (-2d) | 9.74d → 11d |  |
| 9 | **Finishing** | 2027-06-07 → 2027-06-06 (-1d) | 2027-06-17 → 2027-06-15 (-2d) |  |  |
| SDR-2-CON-IR-ZA-2140 | Finishing Works for irrigation | 2027-06-07 → 2027-06-06 (-1d) | 2027-06-17 → 2027-06-15 (-2d) | 10.74d → 12d |  |
| 10 | **Repairs** | 2027-06-17 → 2027-06-16 (-1d) | 2027-06-23 → 2027-06-21 (-2d) |  |  |
| SDR-2-CON-IR-ZA-2150 | Repair for irrigation Works | 2027-06-17 → 2027-06-16 (-1d) | 2027-06-23 → 2027-06-21 (-2d) | 10.74d → 12d |  |
| 11 | **IRRIGATION WORKS IN ( PH2-A-MCA0 )** | 2027-05-06 → 2027-05-05 (-1d) | 2027-06-23 → 2027-06-21 (-2d) |  |  |
| 7 | **Pre install** | 2027-05-06 → 2027-05-05 (-1d) | 2027-05-26 → 2027-05-24 (-2d) |  |  |
| SDR-2-CON-IR-ZA-2160 | Pre Install for irrigation Works | 2027-05-06 → 2027-05-05 (-1d) | 2027-05-26 → 2027-05-24 (-2d) | 6.74d → 8d |  |
| 8 | **install** | 2027-05-26 → 2027-05-25 (-1d) | 2027-06-10 → 2027-06-08 (-2d) |  |  |

| ID | Task | Start | Finish | Total float |
| --- | --- | --- | --- | --- |
| SDR-2-CON-IR-ZA-2170 | Installation of HDPE Pipe | 2027-05-26 → 2027-05-25 (-1d) | 2027-06-10 → 2027-06-08 (-2d) | 6.74d → 8d |
| 9 | **Finishing** | 2027-06-10 → 2027-06-09 (-1d) | 2027-06-21 → 2027-06-19 (-2d) |  |
| SDR-2-CON-IR-ZA-2180 | Finishing Works for irrigation | 2027-06-10 → 2027-06-09 (-1d) | 2027-06-21 → 2027-06-19 (-2d) | 6.74d → 8d |
| 10 | **Repairs** | 2027-06-21 → 2027-06-20 (-1d) | 2027-06-23 → 2027-06-21 (-2d) |  |
| SDR-2-CON-IR-ZA-2190 | Repair for irrigation Works | 2027-06-21 → 2027-06-20 (-1d) | 2027-06-23 → 2027-06-21 (-2d) | 6.74d → 8d |
| 12 | **IRRIGATION WORKS IN ( PH2-A-MCB0 )** | 2027-05-06 → 2027-05-05 (-1d) | 2027-06-28 → 2027-06-26 (-2d) |  |
| 7 | **Pre install** | 2027-05-06 → 2027-05-05 (-1d) | 2027-05-29 → 2027-05-26 (-3d) |  |
| SDR-2-CON-IR-ZA-2200 | Pre Install for irrigation Works | 2027-05-06 → 2027-05-05 (-1d) | 2027-05-29 → 2027-05-26 (-3d) | 6.74d → 8d |
| 8 | **install** | 2027-05-29 → 2027-05-27 (-2d) | 2027-06-12 → 2027-06-09 (-3d) |  |
| SDR-2-CON-IR-ZA-2210 | Installation of HDPE Pipe | 2027-05-29 → 2027-05-27 (-2d) | 2027-06-12 → 2027-06-09 (-3d) | 6.74d → 8d |
| 9 | **Finishing** | 2027-06-12 → 2027-06-10 (-2d) | 2027-06-21 → 2027-06-19 (-2d) |  |
| SDR-2-CON-IR-ZA-2220 | Finishing Works for irrigation | 2027-06-12 → 2027-06-10 (-2d) | 2027-06-21 → 2027-06-19 (-2d) | 6.74d → 8d |
| 10 | **Repairs** | 2027-06-21 → 2027-06-20 (-1d) | 2027-06-28 → 2027-06-26 (-2d) |  |
| SDR-2-CON-IR-ZA-2230 | Repair for irrigation Works | 2027-06-21 → 2027-06-20 (-1d) | 2027-06-28 → 2027-06-26 (-2d) | 6.74d → 8d |
| 3 | **IRRIGATION WORKS IN ( PH2-A-MCC0 )** |  | 2027-06-27 → 2027-06-24 (-3d) |  |
| 7 | **Pre install** |  | 2027-05-29 → 2027-05-26 (-3d) |  |
| SDR-2-CON-IR-ZA-2240 | Pre Install for irrigation Works |  | 2027-05-29 → 2027-05-26 (-3d) | 6.74d → 8d |
| 8 | **install** | 2027-05-29 → 2027-05-27 (-2d) | 2027-06-13 → 2027-06-10 (-3d) |  |
| SDR-2-CON-IR-ZA-2250 | Installation of HDPE Pipe | 2027-05-29 → 2027-05-27 (-2d) | 2027-06-13 → 2027-06-10 (-3d) | 6.74d → 8d |
| 9 | **Finishing** | 2027-06-13 → 2027-06-12 (-1d) | 2027-06-24 → 2027-06-22 (-2d) |  |
| SDR-2-CON-IR-ZA-2260 | Finishing Works for irrigation | 2027-06-13 → 2027-06-12 (-1d) | 2027-06-24 → 2027-06-22 (-2d) | 6.74d → 8d |
| 10 | **Repairs** | 2027-06-24 → 2027-06-23 (-1d) | 2027-06-27 → 2027-06-24 (-3d) |  |
| SDR-2-CON-IR-ZA-2270 | Repair for irrigation Works | 2027-06-24 → 2027-06-23 (-1d) | 2027-06-27 → 2027-06-24 (-3d) | 6.74d → 8d |
| 4 | **IRRIGATION WORKS IN ( PH2-A-MCD0 )** |  | 2027-06-14 → 2027-06-12 (-2d) |  |
| 7 | **Pre install** |  | 2027-06-05 → 2027-06-02 (-3d) |  |
| SDR-2-CON-IR-ZA-2280 | Pre Install for irrigation Works |  | 2027-06-05 → 2027-06-02 (-3d) | 18.74d → 20d |
| 8 | **install** |  | 2027-06-05 → 2027-06-02 (-3d) |  |
| SDR-2-CON-IR-ZA-2290 | Installation of HDPE Pipe |  | 2027-06-05 → 2027-06-02 (-3d) | 18.74d → 20d |
| 9 | **Finishing** | 2027-06-05 → 2027-06-03 (-2d) | 2027-06-09 → 2027-06-07 (-2d) |  |
| SDR-2-CON-IR-ZA-2300 | Finishing Works for irrigation | 2027-06-05 → 2027-06-03 (-2d) | 2027-06-09 → 2027-06-07 (-2d) | 18.74d → 20d |
| 10 | **Repairs** | 2027-06-09 → 2027-06-08 (-1d) | 2027-06-14 → 2027-06-12 (-2d) |  |
| SDR-2-CON-IR-ZA-2310 | Repair for irrigation Works | 2027-06-09 → 2027-06-08 (-1d) | 2027-06-14 → 2027-06-12 (-2d) | 18.74d → 20d |
| 5 | **IRRIGATION WORKS IN ( PH2-A-MCE0 )** |  | 2027-06-28 → 2027-06-26 (-2d) |  |
| 7 | **Pre install** |  | 2027-05-29 → 2027-05-26 (-3d) |  |
| SDR-2-CON-IR-ZA-2320 | Pre Install for irrigation Works |  | 2027-05-29 → 2027-05-26 (-3d) | 6.74d → 8d |
| 8 | **install** |  | 2027-06-13 → 2027-06-10 (-3d) |  |
| SDR-2-CON-IR-ZA-2330 | Installation of HDPE Pipe |  | 2027-06-13 → 2027-06-10 (-3d) | 6.74d → 8d |
| 9 | **Finishing** | 2027-06-13 → 2027-06-12 (-1d) | 2027-06-24 → 2027-06-22 (-2d) |  |
| SDR-2-CON-IR-ZA-2340 | Finishing Works for irrigation | 2027-06-13 → 2027-06-12 (-1d) | 2027-06-24 → 2027-06-22 (-2d) | 6.74d → 8d |
| 10 | **Repairs** | 2027-06-24 → 2027-06-23 (-1d) | 2027-06-28 → 2027-06-26 (-2d) |  |
| SDR-2-CON-IR-ZA-2350 | Repair for irrigation Works | 2027-06-24 → 2027-06-23 (-1d) | 2027-06-28 → 2027-06-26 (-2d) | 6.74d → 8d |
| 6 | **IRRIGATION WORKS IN ( PH2-A-MCF0 )** | 2027-05-06 → 2027-05-05 (-1d) | 2027-06-28 → 2027-06-26 (-2d) |  |
| 7 | **Pre install** | 2027-05-06 → 2027-05-05 (-1d) | 2027-05-29 → 2027-05-26 (-3d) |  |
| SDR-2-CON-IR-ZA-2360 | Pre Install for irrigation Works | 2027-05-06 → 2027-05-05 (-1d) | 2027-05-29 → 2027-05-26 (-3d) | 6.74d → 8d |
| 8 | **install** | 2027-05-29 → 2027-05-27 (-2d) | 2027-06-13 → 2027-06-10 (-3d) |  |
| SDR-2-CON-IR-ZA-2370 | Installation of HDPE Pipe | 2027-05-29 → 2027-05-27 (-2d) | 2027-06-13 → 2027-06-10 (-3d) | 6.74d → 8d |
| 9 | **Finishing** | 2027-06-13 → 2027-06-12 (-1d) | 2027-06-24 → 2027-06-22 (-2d) |  |
| SDR-2-CON-IR-ZA-2380 | Finishing Works for irrigation | 2027-06-13 → 2027-06-12 (-1d) | 2027-06-24 → 2027-06-22 (-2d) | 6.74d → 8d |
| 10 | **Repairs** | 2027-06-24 → 2027-06-23 (-1d) | 2027-06-28 → 2027-06-26 (-2d) |  |
| SDR-2-CON-IR-ZA-2390 | Repair for irrigation Works | 2027-06-24 → 2027-06-23 (-1d) | 2027-06-28 → 2027-06-26 (-2d) | 6.74d → 8d |
| 7 | **IRRIGATION WORKS IN ( PH2-A-MCG0 )** | 2027-05-06 → 2027-05-05 (-1d) | 2027-06-28 → 2027-06-26 (-2d) |  |
| 7 | **Pre install** | 2027-05-06 → 2027-05-05 (-1d) | 2027-05-29 → 2027-05-26 (-3d) |  |
| SDR-2-CON-IR-ZA-2400 | Pre Install for irrigation Works | 2027-05-06 → 2027-05-05 (-1d) | 2027-05-29 → 2027-05-26 (-3d) | 6.74d → 8d |
| 8 | **install** | 2027-05-29 → 2027-05-27 (-2d) | 2027-06-13 → 2027-06-10 (-3d) |  |
| SDR-2-CON-IR-ZA-2410 | Installation of HDPE Pipe | 2027-05-29 → 2027-05-27 (-2d) | 2027-06-13 → 2027-06-10 (-3d) | 6.74d → 8d |
| 9 | **Finishing** | 2027-06-13 → 2027-06-12 (-1d) | 2027-06-26 → 2027-06-23 (-3d) |  |
| SDR-2-CON-IR-ZA-2420 | Finishing Works for irrigation | 2027-06-13 → 2027-06-12 (-1d) | 2027-06-26 → 2027-06-23 (-3d) | 6.74d → 8d |
| 10 | **Repairs** | 2027-06-26 → 2027-06-24 (-2d) | 2027-06-28 → 2027-06-26 (-2d) |  |
| SDR-2-CON-IR-ZA-2430 | Repair for irrigation Works | 2027-06-26 → 2027-06-24 (-2d) | 2027-06-28 → 2027-06-26 (-2d) | 6.74d → 8d |
| 8 | **IRRIGATION WORKS IN ( PH2-A-MCH0 )** | 2027-05-06 → 2027-05-05 (-1d) | 2027-06-28 → 2027-06-26 (-2d) |  |
| 7 | **Pre install** | 2027-05-06 → 2027-05-05 (-1d) | 2027-05-29 → 2027-05-26 (-3d) |  |
| SDR-2-CON-IR-ZA-2440 | Pre Install for irrigation Works | 2027-05-06 → 2027-05-05 (-1d) | 2027-05-29 → 2027-05-26 (-3d) | 6.74d → 8d |
| 8 | **install** | 2027-05-29 → 2027-05-27 (-2d) | 2027-06-13 → 2027-06-10 (-3d) |  |
| SDR-2-CON-IR-ZA-2450 | Installation of HDPE Pipe | 2027-05-29 → 2027-05-27 (-2d) | 2027-06-13 → 2027-06-10 (-3d) | 6.74d → 8d |
| 9 | **Finishing** | 2027-06-13 → 2027-06-12 (-1d) | 2027-06-26 → 2027-06-23 (-3d) |  |
| SDR-2-CON-IR-ZA-2460 | Finishing Works for irrigation | 2027-06-13 → 2027-06-12 (-1d) | 2027-06-26 → 2027-06-23 (-3d) | 6.74d → 8d |
| 10 | **Repairs** | 2027-06-26 → 2027-06-24 (-2d) | 2027-06-28 → 2027-06-26 (-2d) |  |
| SDR-2-CON-IR-ZA-2470 | Repair for irrigation Works | 2027-06-26 → 2027-06-24 (-2d) | 2027-06-28 → 2027-06-26 (-2d) | 6.74d → 8d |
| 9 | **IRRIGATION WORKS IN ( PH2-ART-MC00 )** |  | 2027-06-28 → 2027-06-26 (-2d) |  |
| 7 | **Pre install** |  | 2027-06-05 → 2027-06-02 (-3d) |  |

| ID | Task | Start | Finish | Total float |
| --- | --- | --- | --- | --- |
| SDR-2-CON-IR-ZA-2480 | Pre Install for irrigation Works |  | 2027-06-05 → 2027-06-02 (-3d) | 20.74d → 22d |
| 8 | **install** |  | 2027-05-27 → 2027-05-25 (-2d) |  |
| SDR-2-CON-IR-ZA-2490 | Installation of HDPE Pipe |  | 2027-05-27 → 2027-05-25 (-2d) | 20.74d → 22d |
| 9 | **Finishing** | 2027-05-27 → 2027-05-26 (-1d) | 2027-06-09 → 2027-06-07 (-2d) |  |
| SDR-2-CON-IR-ZA-2500 | Finishing Works for irrigation | 2027-05-27 → 2027-05-26 (-1d) | 2027-06-09 → 2027-06-07 (-2d) | 20.74d → 22d |
| 10 | **Repairs** | 2027-06-26 → 2027-06-24 (-2d) | 2027-06-28 → 2027-06-26 (-2d) |  |
| SDR-2-CON-IR-ZA-2510 | Repair for irrigation Works | 2027-06-26 → 2027-06-24 (-2d) | 2027-06-28 → 2027-06-26 (-2d) | 6.74d → 8d |
| 10 | **IRRIGATION WORKS IN ( PH2-ART-MC10 )** |  | 2027-06-28 → 2027-06-26 (-2d) |  |
| 7 | **Pre install** |  | 2027-05-08 → 2027-05-05 (-3d) |  |
| SDR-2-CON-IR-ZA-2520 | Pre Install for irrigation Works |  | 2027-05-08 → 2027-05-05 (-3d) | 2.44d → 3.7d |
| 8 | **install** |  | 2027-05-29 → 2027-05-26 (-3d) |  |
| SDR-2-CON-IR-ZA-2530 | Installation of HDPE Pipe |  | 2027-05-29 → 2027-05-26 (-3d) | 19.74d → 21d |
| 9 | **Finishing** | 2027-05-29 → 2027-05-27 (-2d) | 2027-06-10 → 2027-06-08 (-2d) |  |
| SDR-2-CON-IR-ZA-2540 | Finishing Works for irrigation | 2027-05-29 → 2027-05-27 (-2d) | 2027-06-10 → 2027-06-08 (-2d) | 19.74d → 21d |
| 10 | **Repairs** | 2027-06-26 → 2027-06-24 (-2d) | 2027-06-28 → 2027-06-26 (-2d) |  |
| SDR-2-CON-IR-ZA-2550 | Repair for irrigation Works | 2027-06-26 → 2027-06-24 (-2d) | 2027-06-28 → 2027-06-26 (-2d) | 6.74d → 8d |
| 13 | **Irrigation Controllers** | 2027-05-04 → 2027-05-03 (-1d) | 2027-06-27 → 2027-06-24 (-3d) |  |
| 1 | **Pre install** | 2027-05-04 → 2027-05-03 (-1d) | 2027-06-03 → 2027-06-02 (-1d) |  |
| SDR-2-CON-IR-ZA-2070 | Pre Install of Irrigation controllers | 2027-05-04 → 2027-05-03 (-1d) | 2027-06-03 → 2027-06-02 (-1d) | 13.44d → 14.7d |
| 2 | **install** | 2027-05-22 → 2027-05-15 (-7d) | 2027-06-08 → 2027-06-07 (-1d) |  |
| SDR-2-CON-IR-ZA-2760 | Install Irrigation controllers | 2027-05-22 → 2027-05-15 (-7d) | 2027-06-08 → 2027-06-07 (-1d) | 13.44d → 14.7d |
| 3 | **Finishing** | 2027-06-08 → 2027-06-07 (-1d) | 2027-06-17 → 2027-06-16 (-1d) |  |
| SDR-2-CON-IR-ZA-2770 | Finishing of Irrigation controllers | 2027-06-08 → 2027-06-07 (-1d) | 2027-06-17 → 2027-06-16 (-1d) | 13.44d → 14.7d |
| 4 | **Repairs** | 2027-06-26 → 2027-06-24 (-2d) | 2027-06-27 → 2027-06-24 (-3d) |  |
| SDR-2-CON-IR-ZA-2780 | Repairs of Irrigation controllers | 2027-06-26 → 2027-06-24 (-2d) | 2027-06-27 → 2027-06-24 (-3d) | 6.74d → 8d |
| 14 | **Decoder Cable & Conduit Works** | 2027-05-04 → 2027-05-03 (-1d) | 2027-06-28 → 2027-06-27 (-1d) |  |
| 1 | **Pre install** | 2027-05-04 → 2027-05-03 (-1d) | 2027-06-03 → 2027-06-02 (-1d) |  |
| SDR-2-CON-IR-ZA-2080 | Pre Install of Decoder Cable & Conduits Works | 2027-05-04 → 2027-05-03 (-1d) | 2027-06-03 → 2027-06-02 (-1d) | 5.44d → 6.7d |
| 2 | **install** | 2027-06-03 → 2027-06-02 (-1d) | 2027-06-21 → 2027-06-20 (-1d) |  |
| SDR-2-CON-IR-ZA-2090 | Install of Decoder Cable & Conduits Works | 2027-06-03 → 2027-06-02 (-1d) | 2027-06-21 → 2027-06-20 (-1d) | 5.44d → 6.7d |
| 3 | **Finishing** | 2027-06-21 → 2027-06-20 (-1d) | 2027-06-27 → 2027-06-26 (-1d) |  |
| SDR-2-CON-IR-ZA-2790 | Finishing of Decoder Cable & Conduits Works | 2027-06-21 → 2027-06-20 (-1d) | 2027-06-27 → 2027-06-26 (-1d) | 5.44d → 6.7d |
| 4 | **Repairs** | 2027-06-27 → 2027-06-26 (-1d) | 2027-06-28 → 2027-06-27 (-1d) |  |
| SDR-2-CON-IR-ZA-2800 | Repair of Decoder Cable & Conduits Works | 2027-06-27 → 2027-06-26 (-1d) | 2027-06-28 → 2027-06-27 (-1d) | 5.44d → 6.7d |
| 15 | **Solar Power System Installation** | 2027-05-04 → 2027-05-03 (-1d) | 2027-06-29 → 2027-06-28 (-1d) |  |
| 1 | **Pre install** | 2027-05-04 → 2027-05-03 (-1d) | 2027-06-03 → 2027-06-02 (-1d) |  |
| SDR-2-CON-IR-ZA-2100 | Pre Install of Solar Power System Installation | 2027-05-04 → 2027-05-03 (-1d) | 2027-06-03 → 2027-06-02 (-1d) | 5.44d → 6.7d |
| 2 | **install** | 2027-06-03 → 2027-06-02 (-1d) | 2027-06-21 → 2027-06-20 (-1d) |  |
| SDR-2-CON-IR-ZA-2810 | Install of Pre Install of Solar Power System Installation | 2027-06-03 → 2027-06-02 (-1d) | 2027-06-21 → 2027-06-20 (-1d) | 5.44d → 6.7d |
| 3 | **Finishing** | 2027-06-21 → 2027-06-20 (-1d) | 2027-06-28 → 2027-06-27 (-1d) |  |
| SDR-2-CON-IR-ZA-2820 | Finishing of Pre Install of Solar Power System Installation | 2027-06-21 → 2027-06-20 (-1d) | 2027-06-28 → 2027-06-27 (-1d) | 5.44d → 6.7d |
| 4 | **Repairs** | 2027-06-28 → 2027-06-27 (-1d) | 2027-06-29 → 2027-06-28 (-1d) |  |
| SDR-2-CON-IR-ZA-2830 | Repair of Solar Power System Installation | 2027-06-28 → 2027-06-27 (-1d) | 2027-06-29 → 2027-06-28 (-1d) | 5.44d → 6.7d |
| 16 | **System Integration & Programming** | 2027-05-04 → 2027-05-03 (-1d) | 2027-06-29 → 2027-06-28 (-1d) |  |
| 1 | **Pre install** | 2027-05-04 → 2027-05-03 (-1d) | 2027-06-03 → 2027-06-02 (-1d) |  |
| SDR-2-CON-IR-ZA-2110 | Pre Install of System Integration & Programming | 2027-05-04 → 2027-05-03 (-1d) | 2027-06-03 → 2027-06-02 (-1d) | 13.44d → 14.7d |
| 2 | **install** | 2027-05-22 → 2027-05-15 (-7d) | 2027-06-08 → 2027-06-07 (-1d) |  |
| SDR-2-CON-IR-ZA-2840 | Install of System Integration & Programming | 2027-05-22 → 2027-05-15 (-7d) | 2027-06-08 → 2027-06-07 (-1d) | 13.44d → 14.7d |
| 3 | **Finishing** | 2027-06-08 → 2027-06-07 (-1d) | 2027-06-17 → 2027-06-16 (-1d) |  |
| SDR-2-CON-IR-ZA-2850 | Finishing of System Integration & Programming | 2027-06-08 → 2027-06-07 (-1d) | 2027-06-17 → 2027-06-16 (-1d) | 13.44d → 14.7d |
| 4 | **Repairs** | 2027-06-28 → 2027-06-27 (-1d) | 2027-06-29 → 2027-06-28 (-1d) |  |
| SDR-2-CON-IR-ZA-2860 | Repair of System Integration & Programming | 2027-06-28 → 2027-06-27 (-1d) | 2027-06-29 → 2027-06-28 (-1d) | 5.44d → 6.7d |
| 1 | **Landscape Works** | 2027-05-05 → 2027-05-03 (-2d) | 2027-06-29 → 2027-06-28 (-1d) |  |
| 1 | **GROUND COVER** | 2027-05-05 → 2027-05-03 (-2d) | 2027-06-03 → 2027-06-02 (-1d) |  |
| SDR-2-CON-LS-ZA-1000 | Clearing & grubbing of landscape areas | 2027-05-05 → 2027-05-03 (-2d) | 2027-05-27 → 2027-05-26 (-1d) | 2d → 3.7d |
| SDR-2-CON-LS-ZA-1010 | Grass laying | 2027-05-13 → 2027-05-11 (-2d) | 2027-06-03 → 2027-06-02 (-1d) | 10d → 11.7d |
| 2 | **Trees** | 2027-06-05 → 2027-06-02 (-3d) | 2027-06-23 → 2027-06-22 (-1d) |  |
| SDR-2-CON-LS-ZA-1020 | Albizia lebbeck tress planting. | 2027-06-05 → 2027-06-02 (-3d) | 2027-06-20 → 2027-06-19 (-1d) | 10d → 11.7d |
| SDR-2-CON-LS-ZA-1030 | Tabopia tress planting. | 2027-06-05 → 2027-06-02 (-3d) | 2027-06-20 → 2027-06-19 (-1d) | 10d → 11.7d |
| SDR-2-CON-LS-ZA-1040 | Plumeria alba tress planting. | 2027-06-08 → 2027-06-06 (-2d) | 2027-06-23 → 2027-06-22 (-1d) | 10d → 11.7d |
| SDR-2-CON-LS-ZA-1050 | Cassia glauca tress planting. | 2027-06-08 → 2027-06-06 (-2d) | 2027-06-23 → 2027-06-22 (-1d) | 10d → 11.7d |
| 3 | **Miscellaneous landscaping items** | 2027-06-14 → 2027-06-13 (-1d) | 2027-06-29 → 2027-06-28 (-1d) |  |
| SDR-2-CON-LS-ZA-1060 | Gravel/Stone mulch: 75mm thick Hard, durable stone, washed free of loam, sand, clay, | 2027-06-14 → 2027-06-13 (-1d) | 2027-06-29 → 2027-06-28 (-1d) | 5.44d → 6.7d |
| ZG | **ZONE G** | 2027-05-04 → 2027-05-03 (-1d) | 2027-07-05 → 2027-07-03 (-2d) |  |
| 2 | **Irrigation Works** | 2027-05-04 → 2027-05-03 (-1d) | 2027-07-05 → 2027-07-03 (-2d) |  |
| 11 | **IRRIGATION WORKS IN ( PH2-G-MCE0 )** | 2027-05-06 → 2027-05-05 (-1d) | 2027-07-05 → 2027-07-03 (-2d) |  |
| 7 | **Pre install** | 2027-05-06 → 2027-05-05 (-1d) | 2027-06-05 → 2027-06-02 (-3d) |  |
| SDR-2-CON-IR-ZA-2560 | Pre Install for irrigation Works | 2027-05-06 → 2027-05-05 (-1d) | 2027-06-05 → 2027-06-02 (-3d) | 0.74d → 2d |
| 8 | **install** | 2027-06-05 → 2027-06-03 (-2d) | 2027-06-20 → 2027-06-17 (-3d) |  |
| SDR-2-CON-IR-ZA-2570 | Installation of HDPE Pipe | 2027-06-05 → 2027-06-03 (-2d) | 2027-06-20 → 2027-06-17 (-3d) | 0.74d → 2d |

| ID | Task | Start | Finish | Total float |
| --- | --- | --- | --- | --- |
| 9 | **Finishing** | 2027-06-20 → 2027-06-19 (-1d) | 2027-07-01 → 2027-06-29 (-2d) |  |
| SDR-2-CON-IR-ZA-2580 | Finishing Works for irrigation | 2027-06-20 → 2027-06-19 (-1d) | 2027-07-01 → 2027-06-29 (-2d) | 0.74d → 2d |
| 10 | **Repairs** | 2027-07-01 → 2027-06-30 (-1d) | 2027-07-05 → 2027-07-03 (-2d) |  |
| SDR-2-CON-IR-ZA-2590 | Repair for irrigation Works | 2027-07-01 → 2027-06-30 (-1d) | 2027-07-05 → 2027-07-03 (-2d) | 0.74d → 2d |
| 5 | **IRRIGATION WORKS IN ( PH2-G-MCZ0 )** | 2027-05-06 → 2027-05-05 (-1d) | 2027-07-05 → 2027-07-03 (-2d) |  |
| 7 | **Pre install** | 2027-05-06 → 2027-05-05 (-1d) | 2027-06-05 → 2027-06-02 (-3d) |  |
| SDR-2-CON-IR-ZA-2600 | Pre Install for irrigation Works | 2027-05-06 → 2027-05-05 (-1d) | 2027-06-05 → 2027-06-02 (-3d) | 0.74d → 2d |
| 8 | **install** | 2027-06-05 → 2027-06-03 (-2d) | 2027-06-20 → 2027-06-17 (-3d) |  |
| SDR-2-CON-IR-ZA-2610 | Installation of HDPE Pipe | 2027-06-05 → 2027-06-03 (-2d) | 2027-06-20 → 2027-06-17 (-3d) | 0.74d → 2d |
| 9 | **Finishing** | 2027-06-20 → 2027-06-19 (-1d) | 2027-07-01 → 2027-06-29 (-2d) |  |
| SDR-2-CON-IR-ZA-2620 | Finishing Works for irrigation | 2027-06-20 → 2027-06-19 (-1d) | 2027-07-01 → 2027-06-29 (-2d) | 0.74d → 2d |
| 10 | **Repairs** | 2027-07-01 → 2027-06-30 (-1d) | 2027-07-05 → 2027-07-03 (-2d) |  |
| SDR-2-CON-IR-ZA-2630 | Repair for irrigation Works | 2027-07-01 → 2027-06-30 (-1d) | 2027-07-05 → 2027-07-03 (-2d) | 0.74d → 2d |
| 1 | **IRRIGATION WORKS IN ( PH2-G-MCA0 )** | 2027-05-06 → 2027-05-05 (-1d) | 2027-07-05 → 2027-07-03 (-2d) |  |
| 7 | **Pre install** | 2027-05-06 → 2027-05-05 (-1d) | 2027-06-03 → 2027-06-01 (-2d) |  |
| SDR-2-CON-IR-ZA-2640 | Pre Install for irrigation Works | 2027-05-06 → 2027-05-05 (-1d) | 2027-06-03 → 2027-06-01 (-2d) | 0.74d → 2d |
| 8 | **install** | 2027-06-03 → 2027-06-02 (-1d) | 2027-06-19 → 2027-06-16 (-3d) |  |
| SDR-2-CON-IR-ZA-2650 | Installation of HDPE Pipe | 2027-06-03 → 2027-06-02 (-1d) | 2027-06-19 → 2027-06-16 (-3d) | 0.74d → 2d |
| 9 | **Finishing** | 2027-06-19 → 2027-06-17 (-2d) | 2027-07-03 → 2027-06-30 (-3d) |  |
| SDR-2-CON-IR-ZA-2660 | Finishing Works for irrigation | 2027-06-19 → 2027-06-17 (-2d) | 2027-07-03 → 2027-06-30 (-3d) | 0.74d → 2d |
| 10 | **Repairs** | 2027-07-03 → 2027-07-01 (-2d) | 2027-07-05 → 2027-07-03 (-2d) |  |
| SDR-2-CON-IR-ZA-2670 | Repair for irrigation Works | 2027-07-03 → 2027-07-01 (-2d) | 2027-07-05 → 2027-07-03 (-2d) | 0.74d → 2d |
| 2 | **IRRIGATION WORKS IN ( PH2-G-MCF0 )** | 2027-05-06 → 2027-05-05 (-1d) | 2027-07-05 → 2027-07-03 (-2d) |  |
| 7 | **Pre install** | 2027-05-06 → 2027-05-05 (-1d) | 2027-06-05 → 2027-06-02 (-3d) |  |
| SDR-2-CON-IR-ZA-2680 | Pre Install for irrigation Works | 2027-05-06 → 2027-05-05 (-1d) | 2027-06-05 → 2027-06-02 (-3d) | 0.74d → 2d |
| 8 | **install** | 2027-06-05 → 2027-06-03 (-2d) | 2027-06-20 → 2027-06-17 (-3d) |  |
| SDR-2-CON-IR-ZA-2690 | Installation of HDPE Pipe | 2027-06-05 → 2027-06-03 (-2d) | 2027-06-20 → 2027-06-17 (-3d) | 0.74d → 2d |
| 9 | **Finishing** | 2027-06-20 → 2027-06-19 (-1d) | 2027-07-03 → 2027-06-30 (-3d) |  |
| SDR-2-CON-IR-ZA-2700 | Finishing Works for irrigation | 2027-06-20 → 2027-06-19 (-1d) | 2027-07-03 → 2027-06-30 (-3d) | 0.74d → 2d |
| 10 | **Repairs** | 2027-07-03 → 2027-07-01 (-2d) | 2027-07-05 → 2027-07-03 (-2d) |  |
| SDR-2-CON-IR-ZA-2710 | Repair for irrigation Works | 2027-07-03 → 2027-07-01 (-2d) | 2027-07-05 → 2027-07-03 (-2d) | 0.74d → 2d |
| 3 | **IRRIGATION WORKS IN ( PH2-G-MCG0 )** | 2027-05-06 → 2027-05-05 (-1d) | 2027-07-05 → 2027-07-03 (-2d) |  |
| 7 | **Pre install** | 2027-05-06 → 2027-05-05 (-1d) | 2027-06-03 → 2027-06-01 (-2d) |  |
| SDR-2-CON-IR-ZA-2720 | Pre Install for irrigation Works | 2027-05-06 → 2027-05-05 (-1d) | 2027-06-03 → 2027-06-01 (-2d) | 0.74d → 2d |
| 8 | **install** | 2027-06-03 → 2027-06-02 (-1d) | 2027-06-19 → 2027-06-16 (-3d) |  |
| SDR-2-CON-IR-ZA-2730 | Installation of HDPE Pipe | 2027-06-03 → 2027-06-02 (-1d) | 2027-06-19 → 2027-06-16 (-3d) | 0.74d → 2d |
| 9 | **Finishing** | 2027-06-19 → 2027-06-17 (-2d) | 2027-07-03 → 2027-06-30 (-3d) |  |
| SDR-2-CON-IR-ZA-2740 | Finishing Works for irrigation | 2027-06-19 → 2027-06-17 (-2d) | 2027-07-03 → 2027-06-30 (-3d) | 0.74d → 2d |
| 10 | **Repairs** | 2027-07-03 → 2027-07-01 (-2d) | 2027-07-05 → 2027-07-03 (-2d) |  |
| SDR-2-CON-IR-ZA-2750 | Repair for irrigation Works | 2027-07-03 → 2027-07-01 (-2d) | 2027-07-05 → 2027-07-03 (-2d) | 0.74d → 2d |
| 13 | **Irrigation Controllers** | 2027-05-04 → 2027-05-03 (-1d) | 2027-07-05 → 2027-07-03 (-2d) |  |
| 1 | **Pre install** | 2027-05-04 → 2027-05-03 (-1d) | 2027-06-03 → 2027-06-02 (-1d) |  |
| SDR-2-CON-IR-ZA-2870 | Pre Install of Irrigation controllers | 2027-05-04 → 2027-05-03 (-1d) | 2027-06-03 → 2027-06-02 (-1d) | 2.44d → 3.7d |
| 2 | **install** | 2027-06-03 → 2027-06-02 (-1d) | 2027-06-21 → 2027-06-20 (-1d) |  |
| SDR-2-CON-IR-ZA-2880 | Install Irrigation controllers | 2027-06-03 → 2027-06-02 (-1d) | 2027-06-21 → 2027-06-20 (-1d) | 2.44d → 3.7d |
| 3 | **Finishing** | 2027-06-21 → 2027-06-20 (-1d) | 2027-06-30 → 2027-06-29 (-1d) |  |
| SDR-2-CON-IR-ZA-2890 | Finishing of Irrigation controllers | 2027-06-21 → 2027-06-20 (-1d) | 2027-06-30 → 2027-06-29 (-1d) | 2.44d → 3.7d |
| 4 | **Repairs** | 2027-07-03 → 2027-07-01 (-2d) | 2027-07-05 → 2027-07-03 (-2d) |  |
| SDR-2-CON-IR-ZA-2900 | Repairs of Irrigation controllers | 2027-07-03 → 2027-07-01 (-2d) | 2027-07-05 → 2027-07-03 (-2d) | 0.74d → 2d |
| 14 | **Decoder Cable & Conduit Works** | 2027-05-04 → 2027-05-03 (-1d) | 2027-07-05 → 2027-07-03 (-2d) |  |
| 1 | **Pre install** | 2027-05-04 → 2027-05-03 (-1d) | 2027-06-03 → 2027-06-02 (-1d) |  |
| SDR-2-CON-IR-ZA-2910 | Pre Install of Decoder Cable & Conduits Works | 2027-05-04 → 2027-05-03 (-1d) | 2027-06-03 → 2027-06-02 (-1d) | 2.44d → 3.7d |
| 2 | **install** | 2027-06-03 → 2027-06-02 (-1d) | 2027-06-21 → 2027-06-20 (-1d) |  |
| SDR-2-CON-IR-ZA-2920 | Install of Decoder Cable & Conduits Works | 2027-06-03 → 2027-06-02 (-1d) | 2027-06-21 → 2027-06-20 (-1d) | 2.44d → 3.7d |
| 3 | **Finishing** | 2027-06-21 → 2027-06-20 (-1d) | 2027-07-01 → 2027-06-30 (-1d) |  |
| SDR-2-CON-IR-ZA-2930 | Finishing of Decoder Cable & Conduits Works | 2027-06-21 → 2027-06-20 (-1d) | 2027-07-01 → 2027-06-30 (-1d) | 2.44d → 3.7d |
| 4 | **Repairs** | 2027-07-04 → 2027-07-03 (-1d) | 2027-07-05 → 2027-07-03 (-2d) |  |
| SDR-2-CON-IR-ZA-2940 | Repair of Decoder Cable & Conduits Works | 2027-07-04 → 2027-07-03 (-1d) | 2027-07-05 → 2027-07-03 (-2d) | 0.74d → 2d |
| 15 | **Solar Power System Installation** | 2027-05-04 → 2027-05-03 (-1d) | 2027-07-03 → 2027-07-01 (-2d) |  |
| 1 | **Pre install** | 2027-05-04 → 2027-05-03 (-1d) | 2027-06-03 → 2027-06-02 (-1d) |  |
| SDR-2-CON-IR-ZA-2950 | Pre Install of Solar Power System Installation | 2027-05-04 → 2027-05-03 (-1d) | 2027-06-03 → 2027-06-02 (-1d) | 2.44d → 3.7d |
| 2 | **install** | 2027-06-03 → 2027-06-02 (-1d) | 2027-06-21 → 2027-06-20 (-1d) |  |
| SDR-2-CON-IR-ZA-2960 | Install of Pre Install of Solar Power System Installation | 2027-06-03 → 2027-06-02 (-1d) | 2027-06-21 → 2027-06-20 (-1d) | 2.44d → 3.7d |
| 3 | **Finishing** | 2027-06-21 → 2027-06-20 (-1d) | 2027-06-29 → 2027-06-28 (-1d) |  |
| SDR-2-CON-IR-ZA-2970 | Finishing of Pre Install of Solar Power System Installation | 2027-06-21 → 2027-06-20 (-1d) | 2027-06-29 → 2027-06-28 (-1d) | 2.44d → 3.7d |
| 4 | **Repairs** | 2027-06-29 → 2027-06-28 (-1d) | 2027-07-03 → 2027-07-01 (-2d) |  |
| SDR-2-CON-IR-ZA-2980 | Repair of Solar Power System Installation | 2027-06-29 → 2027-06-28 (-1d) | 2027-07-03 → 2027-07-01 (-2d) | 2.44d → 3.7d |
| 1 | **Landscape Works** | 2027-05-05 → 2027-05-03 (-2d) |  |  |
| 1 | **GROUND COVER** | 2027-05-05 → 2027-05-03 (-2d) |  |  |
| SDR-2-CON-LS-ZG-1000 | Clearing & grubbing of landscape areas | 2027-05-05 → 2027-05-03 (-2d) | 2027-05-27 → 2027-05-26 (-1d) | 2d → 3.7d |

| ID | Task | Start | Finish | Total float | Predecessors |
| --- | --- | --- | --- | --- | --- |
| CC | **CCTV Works** |  | 2027-04-20 → 2027-04-27 (+7d) |  |  |
| ZA | **ZONE A** |  | 2027-04-20 → 2027-04-27 (+7d) |  |  |
| 1 | **Poles 1st and 2nd Fix Works** |  | 2027-01-02 → 2027-01-09 (+7d) |  |  |
| 1 | **Excavation** |  | 2026-12-15 → 2026-12-12 (-3d) |  |  |
| SDR-2-CON-CC-ZA-1000 | Excavation 1Sst & 2nd Fix Works |  | 2026-12-15 → 2026-12-12 (-3d) | 11d → 14d |  |
| 2 | **Install Footings** |  | 2026-12-15 → 2026-12-22 (+7d) |  |  |
| SDR-2-CON-CC-ZA-1030 | Install Footings |  | 2026-12-15 → 2026-12-22 (+7d) | 11d → 5d |  |
| 3 | **Backfilling** | 2026-12-16 → 2026-12-23 (+7d) | 2026-12-23 → 2026-12-30 (+7d) |  |  |
| SDR-2-CON-CC-ZA-1050 | Backfilling 1Sst & 2nd Fix Works | 2026-12-16 → 2026-12-23 (+7d) | 2026-12-23 → 2026-12-30 (+7d) | 11d → 5d |  |
| 4 | **Install pole** | 2026-12-24 → 2026-12-31 (+7d) | 2027-01-02 → 2027-01-09 (+7d) |  |  |
| SDR-2-CON-CC-ZA-1060 | Install Pole | 2026-12-24 → 2026-12-31 (+7d) | 2027-01-02 → 2027-01-09 (+7d) | 11d → 5d |  |
| 2 | **25m Pole Package** |  | 2027-04-20 → 2027-04-14 (-6d) |  |  |
| 1 | **Excavation** |  | 2027-01-02 → 2027-01-09 (+7d) |  |  |
| SDR-2-CON-CC-ZA-1080 | 25 Meters Pole Excavation |  | 2027-01-02 → 2027-01-09 (+7d) | 11d → 5d |  |
| 2 | **Install Footings** |  | 2027-01-02 → 2027-01-09 (+7d) |  |  |
| SDR-2-CON-CC-ZA-1090 | 25 Meters pole installation Footings |  | 2027-01-02 → 2027-01-09 (+7d) | 40d → 45d |  |
| 3 | **Backfilling** | 2027-02-27 → 2027-03-06 (+7d) | 2027-03-27 → 2027-04-03 (+7d) |  |  |
| SDR-2-CON-CC-ZA-1100 | 25 Meters pole Backfilling | 2027-02-27 → 2027-03-06 (+7d) | 2027-03-27 → 2027-04-03 (+7d) | 2d → 7d |  |
| 4 | **Install pole** | 2027-03-28 → 2027-03-22 (-6d) | 2027-04-20 → 2027-04-14 (-6d) |  |  |
| SDR-2-CON-CC-ZA-1110 | 25 Meters pole installation | 2027-03-28 → 2027-03-22 (-6d) | 2027-04-20 → 2027-04-14 (-6d) | 2d → 7d | SDR-2-CON-CC-ZA-1100 → SDR-2-CON-CC-ZA-1100 SS+10d |
| 3 | **7m Pole Package** |  | 2027-03-02 → 2027-03-14 (+12d) |  |  |
| 1 | **Excavation** |  | 2027-01-02 → 2027-01-09 (+7d) |  |  |
| SDR-2-CON-CC-ZA-1240 | 7m Meters Pole Excavation |  | 2027-01-02 → 2027-01-09 (+7d) | 11d → 5d |  |
| 2 | **Install Footings** |  | 2027-01-02 → 2027-01-09 (+7d) |  |  |
| SDR-2-CON-CC-ZA-1250 | 7m Meters pole installation Footings |  | 2027-01-02 → 2027-01-09 (+7d) | 40d → 34d |  |
| 3 | **Backfilling** | 2027-01-11 → 2027-01-18 (+7d) | 2027-02-03 → 2027-02-10 (+7d) |  |  |
| SDR-2-CON-CC-ZA-1260 | 7m Meters pole Backfilling | 2027-01-11 → 2027-01-18 (+7d) | 2027-02-03 → 2027-02-10 (+7d) | 40d → 34d |  |
| 4 | **Install pole** | 2027-02-06 → 2027-02-13 (+7d) | 2027-03-02 → 2027-03-14 (+12d) |  |  |
| SDR-2-CON-CC-ZA-1270 | 7 Meters pole Installation | 2027-02-06 → 2027-02-13 (+7d) | 2027-03-02 → 2027-03-14 (+12d) | 40d → 34d |  |
| 4 | **35m Pole Package** |  | 2027-04-20 → 2027-04-27 (+7d) |  |  |
| 1 | **Excavation** |  | 2027-01-02 → 2027-01-09 (+7d) |  |  |
| SDR-2-CON-CC-ZA-1380 | 35m Meters Pole Excavation |  | 2027-01-02 → 2027-01-09 (+7d) | 11d → 5d |  |
| 2 | **Install Footings** |  | 2027-01-03 → 2027-01-10 (+7d) |  |  |
| SDR-2-CON-CC-ZA-1390 | 35m Meters pole installation Footings |  | 2027-01-03 → 2027-01-10 (+7d) | 53d → 97d |  |
| 3 | **Backfilling** | 2027-03-04 → 2027-03-16 (+12d) | 2027-03-28 → 2027-04-04 (+7d) |  |  |
| SDR-2-CON-CC-ZA-1400 | 35m Meters pole Backfilling | 2027-03-04 → 2027-03-16 (+12d) | 2027-03-28 → 2027-04-04 (+7d) | 2d → 54d |  |
| 4 | **Install pole** | 2027-03-29 → 2027-04-05 (+7d) | 2027-04-20 → 2027-04-27 (+7d) |  |  |
| SDR-2-CON-CC-ZA-1410 | 35 Meters pole Installation | 2027-03-29 → 2027-04-05 (+7d) | 2027-04-20 → 2027-04-27 (+7d) | 2d → 54d |  |
| 5 | **Control Room** | 2027-01-20 → 2027-01-27 (+7d) | 2027-02-11 → 2027-02-18 (+7d) |  |  |
| SDR-2-CON-CC-ZA-1500 | Existing Control Room Preparation to accomodate the new equipment | 2027-01-20 → 2027-01-27 (+7d) | 2027-01-26 → 2027-02-02 (+7d) | 11d → 5d |  |
| SDR-2-CON-CC-ZA-1510 | VMS Server | 2027-01-20 → 2027-01-27 (+7d) | 2027-01-24 → 2027-01-31 (+7d) | 11d → 5d |  |
| SDR-2-CON-CC-ZA-1520 | Surveillance-optimized server for recording CCTV support simultaneous cameras stream and recording at high resolution | 2027-01-21 → 2027-01-28 (+7d) | 2027-01-25 → 2027-02-01 (+7d) | 11d → 5d |  |
| SDR-2-CON-CC-ZA-1530 | Video analytic computing hardware | 2027-01-23 → 2027-01-30 (+7d) | 2027-01-26 → 2027-02-02 (+7d) | 11d → 5d |  |
| SDR-2-CON-CC-ZA-1540 | Workstation | 2027-01-24 → 2027-01-31 (+7d) | 2027-02-01 → 2027-02-08 (+7d) | 11d → 5d |  |
| SDR-2-CON-CC-ZA-1550 | Professional LED screen 32 inch for workstations | 2027-01-25 → 2027-02-01 (+7d) | 2027-01-28 → 2027-02-04 (+7d) | 11d → 5d |  |
| SDR-2-CON-CC-ZA-1560 | Professional 55" video wall cube | 2027-01-27 → 2027-02-03 (+7d) | 2027-01-31 → 2027-02-07 (+7d) | 11d → 5d |  |
| SDR-2-CON-CC-ZA-1570 | Industrial Rack-Mount Managed Modular Gigabit Ethernet PoE Switch (24-Port) for outdoor application | 2027-02-02 → 2027-02-09 (+7d) | 2027-02-10 → 2027-02-17 (+7d) | 11d → 5d |  |
| SDR-2-CON-CC-ZA-1580 | SFP 1000Base-X SM | 2027-02-02 → 2027-02-09 (+7d) | 2027-02-09 → 2027-02-16 (+7d) | 11d → 5d |  |
| SDR-2-CON-CC-ZA-1590 | Professional joystick for accurate control of PTZ and PT Thermal Cameras. | 2027-02-03 → 2027-02-10 (+7d) | 2027-02-07 → 2027-02-14 (+7d) | 11d → 5d |  |
| SDR-2-CON-CC-ZA-1600 | Fiber patch panel including all related accessories | 2027-02-04 → 2027-02-11 (+7d) | 2027-02-11 → 2027-02-18 (+7d) | 11d → 5d |  |
| SDR-2-CON-CC-ZA-1610 | UPS 5000VA to power for all servers, monitor, and switch in the cabinet | 2027-02-04 → 2027-02-11 (+7d) | 2027-02-08 → 2027-02-15 (+7d) | 11d → 5d |  |
| SDR-2-CON-CC-ZA-1620 | Outdoor Carrier Class Shielded Ethernet Cable for P-to-P access points 305 meter | 2027-02-04 → 2027-02-11 (+7d) | 2027-02-11 → 2027-02-18 (+7d) | 33d → 27d |  |
| 6 | **Licenses,Documentation,Testing and Training** | 2027-02-08 → 2027-02-15 (+7d) | 2027-02-14 → 2027-02-21 (+7d) |  |  |
| SDR-2-CON-CC-ZA-1630 | VMS Lifetime Licenses | 2027-02-08 → 2027-02-15 (+7d) | 2027-02-14 → 2027-02-21 (+7d) | 55d → 49d |  |
| SDR-2-CON-CC-ZA-1640 | Camera-Interlink License | 2027-02-08 → 2027-02-15 (+7d) | 2027-02-14 → 2027-02-21 (+7d) | 55d → 49d |  |
| SDR-2-CON-CC-ZA-1650 | Video analytics license package | 2027-02-08 → 2027-02-15 (+7d) | 2027-02-11 → 2027-02-18 (+7d) | 55d → 49d |  |
| SDR-2-CON-CC-ZA-1660 | Video analytics license for ANPR | 2027-02-08 → 2027-02-15 (+7d) | 2027-02-11 → 2027-02-18 (+7d) | 55d → 49d |  |
| ZG | **ZONE G** |  | 2027-04-20 → 2027-04-14 (-6d) |  |  |
| 1 | **Poles 1st and 2nd Fix Works** |  | 2026-10-29 → 2026-11-05 (+7d) |  |  |
| 1 | **Excavation** |  | 2026-10-12 → 2026-10-19 (+7d) |  |  |
| SDR-2-CON-CC-ZA-1670 | Excavation 1Sst & 2nd Fix Works |  | 2026-10-12 → 2026-10-19 (+7d) | 19d → 17d |  |
| 2 | **Install Footings** |  | 2026-10-12 → 2026-10-19 (+7d) |  |  |
| SDR-2-CON-CC-ZA-1700 | Install Footings |  | 2026-10-12 → 2026-10-19 (+7d) | 19d → 17d |  |
| 3 | **Backfilling** | 2026-10-13 → 2026-10-20 (+7d) | 2026-10-20 → 2026-10-27 (+7d) |  |  |
| SDR-2-CON-CC-ZA-1720 | Backfilling 1Sst & 2nd Fix Works | 2026-10-13 → 2026-10-20 (+7d) | 2026-10-20 → 2026-10-27 (+7d) | 19d → 17d |  |
| 4 | **Install pole** | 2026-10-21 → 2026-10-28 (+7d) | 2026-10-29 → 2026-11-05 (+7d) |  |  |
| SDR-2-CON-CC-ZA-1730 | Install Pole | 2026-10-21 → 2026-10-28 (+7d) | 2026-10-29 → 2026-11-05 (+7d) | 19d → 17d |  |
| 2 | **25m Pole Package** |  | 2027-01-21 → 2027-01-28 (+7d) |  |  |
| 1 | **Excavation** |  | 2026-10-29 → 2026-11-05 (+7d) |  |  |
| SDR-2-CON-CC-ZA-1750 | 25 Meters Pole Excavation |  | 2026-10-29 → 2026-11-05 (+7d) | 19d → 17d |  |

| ID | Task | Start | Finish | Total float | Predecessors |
| --- | --- | --- | --- | --- | --- |
| 2 | **Install Footings** | 2026-10-31 → 2026-11-07 (+7d) | 2026-11-23 → 2026-11-30 (+7d) |  |  |
| SDR-2-CON-CC-ZA-1760 | 25 Meters pole installation Footings | 2026-10-31 → 2026-11-07 (+7d) | 2026-11-23 → 2026-11-30 (+7d) | 19d → 18d |  |
| 3 | **Backfilling** | 2026-11-24 → 2026-12-01 (+7d) | 2026-12-16 → 2026-12-23 (+7d) |  |  |
| SDR-2-CON-CC-ZA-1770 | 25 Meters pole Backfilling | 2026-11-24 → 2026-12-01 (+7d) | 2026-12-16 → 2026-12-23 (+7d) | 19d → 18d |  |
| 4 | **Install pole** | 2026-12-29 → 2027-01-05 (+7d) | 2027-01-21 → 2027-01-28 (+7d) |  |  |
| SDR-2-CON-CC-ZA-1780 | 25 Meters pole installation | 2026-12-29 → 2027-01-05 (+7d) | 2027-01-21 → 2027-01-28 (+7d) | 19d → 18d |  |
| 3 | **7m Pole Package** |  | 2027-03-04 → 2027-03-16 (+12d) |  |  |
| 1 | **Excavation** |  | 2026-10-29 → 2026-11-05 (+7d) |  |  |
| SDR-2-CON-CC-ZA-1790 | 7m Meters Pole Excavation |  | 2026-10-29 → 2026-11-05 (+7d) | 23d → 17d |  |
| 2 | **Install Footings** | 2026-10-31 → 2026-11-07 (+7d) | 2026-11-22 → 2026-11-29 (+7d) |  |  |
| SDR-2-CON-CC-ZA-1800 | 7m Meters pole installation Footings | 2026-10-31 → 2026-11-07 (+7d) | 2026-11-22 → 2026-11-29 (+7d) | 51d → 45d |  |
| 3 | **Backfilling** | 2026-11-23 → 2026-11-30 (+7d) | 2026-12-15 → 2026-12-22 (+7d) |  |  |
| SDR-2-CON-CC-ZA-1810 | 7m Meters pole Backfilling | 2026-11-23 → 2026-11-30 (+7d) | 2026-12-15 → 2026-12-22 (+7d) | 51d → 45d |  |
| 4 | **Install pole** | 2027-02-08 → 2027-02-15 (+7d) | 2027-03-04 → 2027-03-16 (+12d) |  |  |
| SDR-2-CON-CC-ZA-1820 | 7 Meters pole Installation | 2027-02-08 → 2027-02-15 (+7d) | 2027-03-04 → 2027-03-16 (+12d) | 16d → 10d |  |
| 4 | **35m Pole Package** |  | 2026-12-28 → 2027-01-04 (+7d) |  |  |
| 1 | **Excavation** |  | 2026-10-29 → 2026-11-05 (+7d) |  |  |
| SDR-2-CON-CC-ZA-1830 | 35m Meters Pole Excavation |  | 2026-10-29 → 2026-11-05 (+7d) | 40d → 37d |  |
| 2 | **Install Footings** | 2026-10-31 → 2026-11-07 (+7d) | 2026-11-22 → 2026-11-29 (+7d) |  |  |
| SDR-2-CON-CC-ZA-1840 | 35m Meters pole installation Footings | 2026-10-31 → 2026-11-07 (+7d) | 2026-11-22 → 2026-11-29 (+7d) | 40d → 37d |  |
| 3 | **Backfilling** | 2026-11-03 → 2026-11-10 (+7d) | 2026-11-25 → 2026-12-02 (+7d) |  |  |
| SDR-2-CON-CC-ZA-1850 | 35m Meters pole Backfilling | 2026-11-03 → 2026-11-10 (+7d) | 2026-11-25 → 2026-12-02 (+7d) | 40d → 37d |  |
| 4 | **Install pole** | 2026-12-07 → 2026-12-14 (+7d) | 2026-12-28 → 2027-01-04 (+7d) |  |  |
| SDR-2-CON-CC-ZA-1860 | 35 Meters pole Installation | 2026-12-07 → 2026-12-14 (+7d) | 2026-12-28 → 2027-01-04 (+7d) | 40d → 37d |  |
| 5 | **Control Room** | 2026-10-31 → 2026-11-07 (+7d) | 2026-12-28 → 2027-01-04 (+7d) |  |  |
| SDR-2-CON-CC-ZG-1500 | Existing Control Room Preparation to accomodate the new equipments | 2026-10-31 → 2026-11-07 (+7d) | 2026-11-03 → 2026-11-10 (+7d) | 24d → 18d |  |
| SDR-2-CON-CC-ZG-1540 | Workstation | 2026-10-31 → 2026-11-07 (+7d) | 2026-11-12 → 2026-11-19 (+7d) | 23d → 17d |  |
| SDR-2-CON-CC-ZG-1550 | Professional LED screen 32 inch for workstations | 2026-10-31 → 2026-11-07 (+7d) | 2026-11-03 → 2026-11-10 (+7d) | 23d → 17d |  |
| SDR-2-CON-CC-ZG-1510 | VMS Server | 2026-11-04 → 2026-11-11 (+7d) | 2026-11-09 → 2026-11-16 (+7d) | 24d → 18d |  |
| SDR-2-CON-CC-ZG-1560 | Professional 55" video wall cube | 2026-11-04 → 2026-11-11 (+7d) | 2026-11-08 → 2026-11-15 (+7d) | 23d → 17d |  |
| SDR-2-CON-CC-ZG-1570 | Industrial Rack-Mount Managed Modular Gigabit Ethernet PoE Switch (24-Port) for outdoor application | 2026-11-07 → 2026-11-14 (+7d) | 2026-11-16 → 2026-11-23 (+7d) | 23d → 17d |  |
| SDR-2-CON-CC-ZG-1580 | SFP 1000Base-X SM | 2026-11-07 → 2026-11-14 (+7d) | 2026-11-10 → 2026-11-17 (+7d) | 23d → 17d |  |
| SDR-2-CON-CC-ZG-1520 | Surveillance-optimized server for recording CCTV support simultaneous cameras stream and recording at high resolution | 2026-11-10 → 2026-11-17 (+7d) | 2026-11-14 → 2026-11-21 (+7d) | 24d → 18d |  |
| SDR-2-CON-CC-ZG-1590 | Professional joystick for accurate control of PTZ and PT Thermal Cameras. | 2026-11-11 → 2026-11-18 (+7d) | 2026-11-15 → 2026-11-22 (+7d) | 23d → 17d |  |
| SDR-2-CON-CC-ZG-1530 | Video analytic computing hardware | 2026-11-15 → 2026-11-22 (+7d) | 2026-11-18 → 2026-11-25 (+7d) | 26d → 24d |  |
| SDR-2-CON-CC-ZG-1600 | Fiber patch panel including all related accessories | 2026-11-16 → 2026-11-23 (+7d) | 2026-11-19 → 2026-11-26 (+7d) | 23d → 17d |  |
| SDR-2-CON-CC-ZG-1610 | UPS 5000VA to power for all servers, monitor, and switch in the cabinet | 2026-11-22 → 2026-11-29 (+7d) | 2026-11-28 → 2026-12-05 (+7d) | 23d → 17d |  |
| SDR-2-CON-CC-ZG-1620 | Outdoor Carrier Class Shielded Ethernet Cable for P-to-P access points 305 meter | 2026-12-24 → 2026-12-31 (+7d) | 2026-12-28 → 2027-01-04 (+7d) | 40d → 39d |  |
| 6 | **Licenses,Documentation,Testing and Training** | 2026-11-19 → 2026-11-26 (+7d) | 2027-04-20 → 2027-04-14 (-6d) |  |  |
| SDR-2-CON-CC-ZG-1630 | VMS Lifetime Licenses | 2026-11-19 → 2026-11-26 (+7d) | 2026-11-21 → 2026-11-28 (+7d) | 26d → 24d |  |
| SDR-2-CON-CC-ZG-1640 | Camera-Interlink License | 2026-11-22 → 2026-11-29 (+7d) | 2026-11-22 → 2026-11-29 (+7d) | 26d → 24d |  |
| SDR-2-CON-CC-ZG-1650 | Video analytics license package | 2026-11-22 → 2026-11-29 (+7d) | 2026-11-22 → 2026-11-29 (+7d) | 26d → 24d |  |
| SDR-2-CON-CC-ZG-1660 | Video analytics license for ANPR | 2027-04-20 → 2027-04-14 (-6d) | 2027-04-20 → 2027-04-14 (-6d) | 2d → 7d | SDR-2-CON-CC-ZG-1650 SS, SDR-2-CON-CC-ZA-1620 FF, SDR-2-CON-CC-ZA-1410 FF, SDR-2-CON-CC-ZA-1270 FF, SDR-2-CON-CC-ZA-1110 FF → SDR-2-CON-CC-ZG-1650 SS, SDR-2-CON-CC-ZA-1620 FF, SDR-2-CON-CC-ZA-1270 FF, SDR-2-CON-CC-ZA-1110 FF |
| TC | **Testing & Commissioning** | 2027-02-04 → 2027-02-11 (+7d) | 2027-06-15 → 2027-06-26 (+11d) |  |  |
| 1 | **Civil Works** | 2027-04-24 → 2027-05-01 (+7d) | 2027-04-27 → 2027-05-04 (+7d) |  |  |
| SDR-2-TC-CW-1010 | Testing & Commissioning of road works | 2027-04-24 → 2027-05-01 (+7d) | 2027-04-27 → 2027-05-04 (+7d) | 9d → 17d |  |
| 2 | **Storm Water Drainage Network** | 2027-02-15 → 2027-02-23 (+8d) | 2027-03-01 → 2027-03-08 (+7d) |  |  |
| SDR-2-TC-SWDN-1020 | Testing & Commissioning of network work | 2027-02-15 → 2027-02-23 (+8d) | 2027-03-01 → 2027-03-08 (+7d) | 81d → 75d |  |
| 3 | **Sewerage Network** | 2027-05-08 → 2027-05-02 (-6d) | 2027-05-26 → 2027-05-15 (-11d) |  |  |
| SDR-2-TC-SN-1030 | Testing & Commissioning of Sewage Network | 2027-05-08 → 2027-05-02 (-6d) | 2027-05-26 → 2027-05-15 (-11d) | 7d → 26d |  |
| 4 | **TSE Network** | 2027-06-01 → 2027-06-12 (+11d) | 2027-06-15 → 2027-06-26 (+11d) |  |  |
| SDR-2-TC-TSE-1040 | Testing & Commissioning of TSE Network | 2027-06-01 → 2027-06-12 (+11d) | 2027-06-15 → 2027-06-26 (+11d) | 3d → 8d |  |
| 5 | **Portable Water** | 2027-05-29 → 2027-06-05 (+7d) | 2027-06-07 → 2027-06-14 (+7d) |  |  |
| SDR-2-TC-PW-1050 | Testing & Commissioning of Potable Network | 2027-05-29 → 2027-06-05 (+7d) | 2027-06-07 → 2027-06-14 (+7d) | 6d → 0d |  |
| 6 | **Electrical Works** | 2027-04-21 → 2027-04-15 (-6d) | 2027-04-28 → 2027-04-22 (-6d) |  |  |
| SDR-2-TC-EW-1060 | Testing & Commissioning of Electrical Network | 2027-04-21 → 2027-04-15 (-6d) | 2027-04-28 → 2027-04-22 (-6d) | 7d → 14d |  |
| 7 | **Landscape & Irrigation Works** | 2027-06-01 → 2027-06-05 (+4d) | 2027-06-07 → 2027-06-10 (+3d) |  |  |
| SDR-2-TC-LIW-1070 | Testing & Commissioning of Landscape & Irrigation Network | 2027-06-01 → 2027-06-05 (+4d) | 2027-06-07 → 2027-06-10 (+3d) | 24d → 21d |  |
| 8 | **CCTV Works** | 2027-02-04 → 2027-02-11 (+7d) | 2027-02-15 → 2027-02-23 (+8d) |  |  |
| SDR-2-TC-CCTV-1080 | Testing & Commissioning of medium voltage works | 2027-02-04 → 2027-02-11 (+7d) | 2027-02-15 → 2027-02-23 (+8d) | 11d → 5d |  |
| CO | **Close Out** | 2027-04-21 → 2027-04-15 (-6d) | 2027-07-03 → 2027-07-05 (+2d) |  |  |
| 1 | **As Built Drawings** | 2027-04-21 → 2027-04-15 (-6d) | 2027-06-16 → 2027-06-17 (+1d) |  |  |
| 1 | **Civil** | 2027-04-21 → 2027-04-15 (-6d) | 2027-05-04 → 2027-04-28 (-6d) |  |  |
| SDR-2-CLO-AS-C-1000 | Civil As-Built Drawing Submission | 2027-04-21 → 2027-04-15 (-6d) | 2027-04-28 → 2027-04-22 (-6d) | 2d → 7d |  |
| SDR-2-CLO-AS-C-1010 | Civil As-Built Drawing Approvals | 2027-04-29 → 2027-04-24 (-5d) | 2027-05-04 → 2027-04-28 (-6d) | 2d → 7d |  |
| 2 | **Mechanical** | 2027-05-30 → 2027-05-31 (+1d) | 2027-06-16 → 2027-06-17 (+1d) |  |  |
| SDR-2-CLO-AS-M-1000 | Mechanical As-Built Drawing Submission | 2027-05-30 → 2027-05-31 (+1d) | 2027-06-07 → 2027-06-08 (+1d) | 2d → 1d | SDR-2-CON-PW-ZA-3350 FS+5d, SDR-2-CON-PW-ZA-2320, SDR-2-TC-SWDN-1020 SS, SDR-2-CLO-AS-E-1010 SS+7d → SDR-2-CON-PW-ZA-3350, SDR-2-CON-PW-ZA-2320, SDR-2-TC-SWDN-1020 SS, SDR-2-CLO-AS-E-1010 SS+7d |
| SDR-2-CLO-AS-M-1010 | Mechanical As-Built Drawing Approvals | 2027-06-08 → 2027-06-09 (+1d) | 2027-06-16 → 2027-06-17 (+1d) | 2d → 1d |  |
| 3 | **Electrical** | 2027-04-21 → 2027-04-15 (-6d) | 2027-05-06 → 2027-05-01 (-5d) |  |  |
| SDR-2-CLO-AS-E-1000 | Electrical As-Built Drawing Submission | 2027-04-21 → 2027-04-15 (-6d) | 2027-04-28 → 2027-04-22 (-6d) | 7d → 21d |  |

| ID | Task | Start | Finish | Total float |
| --- | --- | --- | --- | --- |
| SDR-2-CLO-AS-E-1010 | Electrical As-Built Drawing Approvals | 2027-04-29 → 2027-04-24 (-5d) | 2027-05-06 → 2027-05-01 (-5d) | 7d → 21d |
| 2 | **Training and Manuals** | 2027-06-17 → 2027-06-19 (+2d) | 2027-07-03 → 2027-07-04 (+1d) |  |
| SDR-2-CLO-TM-1000 | Training and Manuals | 2027-06-17 → 2027-06-19 (+2d) | 2027-07-03 → 2027-07-04 (+1d) | 2d → 1d |
| 3 | **Demobilize Manpower** | 2027-06-17 → 2027-06-19 (+2d) | 2027-07-03 → 2027-07-04 (+1d) |  |
| SDR-2-CLO-DM-1000 | Manpower Demobilize | 2027-06-17 → 2027-06-19 (+2d) | 2027-07-03 → 2027-07-04 (+1d) | 2d → 1d |
| 4 | **Demobilize Equipment** | 2027-06-17 → 2027-06-19 (+2d) | 2027-07-03 → 2027-07-04 (+1d) |  |
| SDR-2-CLO-DE-1000 | Equipments Demobilize | 2027-06-17 → 2027-06-19 (+2d) | 2027-07-03 → 2027-07-04 (+1d) | 2d → 1d |
| 5 | **Removal of Site Offices and Structures** | 2027-06-17 → 2027-06-19 (+2d) | 2027-07-03 → 2027-07-04 (+1d) |  |
| SDR-2-CLO-RO-1000 | Site Office Removal | 2027-06-17 → 2027-06-19 (+2d) | 2027-07-03 → 2027-07-04 (+1d) | 2d → 1d |
| 6 | **Handover** | 2027-06-27 → 2027-06-30 (+3d) | 2027-07-03 → 2027-07-05 (+2d) |  |
| SDR-2-CLO-HO-1000 | Project Handover | 2027-06-27 → 2027-06-30 (+3d) | 2027-07-03 → 2027-07-05 (+2d) | 2.44d → 0d |

## Version 6 (data date 2026-10-26, saved 2026-10-26, file Sudair 2 P2 26.10.26 INFRA.xer)

Last finish stays 2027-07-05. Complete tasks 787 → 792.

Added:

| ID | Task | Start | Finish |
| --- | --- | --- | --- |
| 9 | **TSE NETWORK IN ( PH2-ART-MCA0 )** | 2026-09-07 | 2027-04-08 |

Removed: TSE NETWORK IN ( PH2-ART-MC00 )

Changed:

| ID | Task | Start | Finish | Complete | Total float |
| --- | --- | --- | --- | --- | --- |
| 3 | **Contractual Milestone** |  | 2027-06-27 → 2027-06-29 (+2d) |  |  |
| SDR-2-MILS-1060 | Completion of medium voltage works | 2027-02-18 → 2027-02-27 (+9d) | 2027-02-18 → 2027-02-27 (+9d) |  | 27d → 21d |
| SDR-2-MILS-1070 | Completion of All Network work | 2027-04-14 → 2027-04-21 (+7d) | 2027-04-14 → 2027-04-21 (+7d) |  | 65d → 59d |
| SDR-2-MILS-1050 | Completion of road works | 2027-04-17 → 2027-04-24 (+7d) | 2027-04-17 → 2027-04-24 (+7d) |  | 18d → 12d |
| SDR-2-MILS-1080 | Completion of finishing works in the project | 2027-06-27 → 2027-06-29 (+2d) | 2027-06-27 → 2027-06-29 (+2d) |  | 7.7d → 5.7d |
| 2 | **Phases Milestone** | 2026-10-19 → 2026-10-26 (+7d) |  |  |  |
| SDR-2-MILS-1090 | Engineering Phase Finish Milestone | 2026-10-19 → 2026-10-26 (+7d) | 2026-10-19 → 2026-10-26 (+7d) |  | 83d → 77d |
| SDR-2-MILS-1100 | Procurment Phase Finish Milestone | 2026-12-22 → 2026-12-29 (+7d) | 2026-12-22 → 2026-12-29 (+7d) |  | 36d → 30d |
| EN | **Engineering** |  | 2026-10-31 → 2026-11-07 (+7d) |  |  |
| 1 | **Shop Drawings Stage** |  | 2026-10-31 → 2026-11-07 (+7d) |  |  |
| 4 | **Approvals** |  | 2026-10-31 → 2026-11-07 (+7d) |  |  |
| 9 | **Electrical** |  | 2026-10-31 → 2026-11-07 (+7d) |  |  |
| SDR-2-ENG-APP-E-1000 | MV Network Layout Approval | 2026-10-19 → 2026-10-26 (+7d) | 2026-10-31 → 2026-11-07 (+7d) |  | 2d → 0d |
| SDR-2-ENG-APP-E-1010 | MV Single Line Diagram Approval | 2026-10-19 → 2026-10-26 (+7d) | 2026-10-31 → 2026-11-07 (+7d) |  | 2d → 0d |
| SDR-2-ENG-APP-E-1020 | Design Of MV Loops Approval | 2026-10-19 → 2026-10-26 (+7d) | 2026-10-31 → 2026-11-07 (+7d) |  | 2d → 0d |
| SDR-2-ENG-APP-E-1030 | Loads For Plots Approval | 2026-10-19 → 2026-10-26 (+7d) | 2026-10-31 → 2026-11-07 (+7d) |  | 2d → 0d |
| SDR-2-ENG-APP-E-1040 | Distribution Substation Approval | 2026-10-19 → 2026-10-26 (+7d) | 2026-10-31 → 2026-11-07 (+7d) |  | 2d → 0d |
| SDR-2-ENG-APP-E-1050 | MV Trench Configuration Details Approval | 2026-10-19 → 2026-10-26 (+7d) | 2026-10-31 → 2026-11-07 (+7d) |  | 2d → 0d |
| SDR-2-ENG-APP-E-1060 | MV Electrical Duct Banks Details Approval | 2026-10-19 → 2026-10-26 (+7d) | 2026-10-31 → 2026-11-07 (+7d) |  | 2d → 0d |
| SDR-2-ENG-APP-E-1070 | Distribution Transformers Approval | 2026-10-19 → 2026-10-26 (+7d) | 2026-10-31 → 2026-11-07 (+7d) |  | 2d → 0d |
| 11 | **CCTV** |  | 2026-10-31 → 2026-11-07 (+7d) |  |  |
| SDR-2-ENG-APP-E-1280 | Typical Solar Panel Installation Detail Approval | 2026-10-19 → 2026-10-26 (+7d) | 2026-10-31 → 2026-11-07 (+7d) |  | 2d → 0d |
| 3 | **Materials** |  | 2026-10-21 → 2026-10-28 (+7d) |  |  |
| 6 | **Materials Approval** |  | 2026-10-21 → 2026-10-28 (+7d) |  |  |
| 2 | **Short Lead Items** |  | 2026-10-21 → 2026-10-28 (+7d) |  |  |
| 1 | **Civil** |  | 2026-10-21 → 2026-10-28 (+7d) |  |  |
| SDR-2-PRO-MAS-C-1030 | Road Marking Approve | 2026-10-19 → 2026-10-26 (+7d) | 2026-10-21 → 2026-10-28 (+7d) |  | 2d → 0d |
| SDR-2-PRO-MAS-C-1060 | Traffic Signage Approve | 2026-10-19 → 2026-10-26 (+7d) | 2026-10-21 → 2026-10-28 (+7d) |  | 2d → 0d |
| PR | **Procurement** |  | 2027-02-21 → 2027-03-01 (+8d) |  |  |
| 3 | **Purchase Order** |  | 2026-11-02 → 2026-11-09 (+7d) |  |  |
| 1 | **Civil** |  | 2026-11-02 → 2026-11-09 (+7d) |  |  |
| SDR-2-PRO-PO-C-1040 | Road Marking PO | 2026-10-19 → 2026-10-26 (+7d) | 2026-11-02 → 2026-11-09 (+7d) |  | 8d → 2d |
| SDR-2-PRO-PO-C-1060 | Traffic Signage PO | 2026-10-19 → 2026-10-26 (+7d) | 2026-11-02 → 2026-11-09 (+7d) |  | 8d → 2d |
| SDR-2-PRO-PO-C-1080 | Fence for Electrical works PO | 2026-10-19 → 2026-10-26 (+7d) | 2026-11-02 → 2026-11-09 (+7d) |  | 18d → 14d |
| SDR-2-PRO-PO-C-1090 | Protection Bollards for CCTV Pole PO | 2026-10-19 → 2026-10-26 (+7d) | 2026-11-02 → 2026-11-09 (+7d) |  | 81d → 75d |
| SDR-2-PRO-PO-C-1100 | Protection (Guard rail) for Fire hydrant PO | 2026-10-19 → 2026-10-26 (+7d) | 2026-10-26 → 2026-11-02 (+7d) |  | 18d → 12d |
| 3 | **Electrical** |  | 2026-11-02 → 2026-11-09 (+7d) |  |  |
| SDR-2-PRO-PO-E-1100 | Unit Substation PO | 2026-10-19 → 2026-10-26 (+7d) | 2026-11-02 → 2026-11-09 (+7d) |  | 11d → 5d |
| SDR-2-PRO-PO-E-1120 | KWH Meter with mounting frame PO | 2026-10-19 → 2026-10-26 (+7d) | 2026-11-02 → 2026-11-09 (+7d) |  | 10d → 4d |
| 1 | **Delivery to Site** |  | 2027-02-17 → 2027-02-25 (+8d) |  |  |
| 2 | **Short Lead Items Delivery** |  | 2027-02-17 → 2027-02-25 (+8d) |  |  |
| 1 | **Civil** |  | 2027-02-17 → 2027-02-25 (+8d) |  |  |
| SDR-2-PRO-DES-C-1020 | Asphalt Mix Delivery |  | 2027-01-05 → 2027-01-12 (+7d) | 30% → 40% | 18.1d → 11.1d |
| SDR-2-PRO-DES-C-1030 | Kerbstone Delivery |  | 2026-11-28 → 2026-12-05 (+7d) | 10% → 15% | 2d → 0d |
| SDR-2-PRO-DES-C-1050 | Interlock Tiles Delivery |  | 2026-11-08 → 2026-11-15 (+7d) | 10% → 15% | 107.1d → 100.1d |
| SDR-2-PRO-DES-C-1090 | Protection Bollards for CCTV Pole Delivery | 2026-11-03 → 2026-11-10 (+7d) | 2026-11-19 → 2026-11-26 (+7d) |  | 95d → 88d |
| SDR-2-PRO-DES-C-1100 | Protection (Guard rail) for Fire hydrant Delivery | 2026-11-03 → 2026-11-10 (+7d) | 2027-01-01 → 2027-01-08 (+7d) |  | 21d → 14d |
| SDR-2-PRO-DES-C-1040 | Road Marking Delivery | 2026-11-20 → 2026-11-27 (+7d) | 2027-02-17 → 2027-02-25 (+8d) |  | 10d → 3d |
| SDR-2-PRO-DES-C-1080 | Fence for Electrical works Delivery | 2026-11-22 → 2026-11-29 (+7d) | 2026-12-20 → 2026-12-27 (+7d) |  | 21d → 16d |
| SDR-2-PRO-DES-C-1060 | Traffic Signage Manufacture and Delivery | 2026-11-27 → 2026-12-04 (+7d) | 2026-12-16 → 2026-12-23 (+7d) |  | 10d → 3d |
| 3 | **Electrical** |  | 2026-11-24 → 2026-12-01 (+7d) |  |  |
| SDR-2-PRO-DES-E-1020 | PECD Ducts for CCTV network Delivery | 2026-10-19 → 2026-10-26 (+7d) | 2026-11-24 → 2026-12-01 (+7d) |  | 6d → 1d |
| 5 | **Long Lead Items Delivery** |  | 2026-12-27 → 2027-01-03 (+7d) |  |  |
| 3 | **Electrical** |  | 2026-12-27 → 2027-01-03 (+7d) |  |  |
| SDR-2-PRO-DEL-E-1020 | Street Lighting Poles Delivery | 2026-10-19 → 2026-10-26 (+7d) | 2026-12-27 → 2027-01-03 (+7d) |  | 8d → 1d |
| SDR-2-PRO-DEL-E-1030 | Street Lighting Fixtures Delivery | 2026-10-19 → 2026-10-26 (+7d) | 2026-12-27 → 2027-01-03 (+7d) |  | 8d → 1d |
| SDR-2-PRO-DEL-E-1070 | Unit Substation Delivery | 2026-10-19 → 2026-10-26 (+7d) | 2026-12-22 → 2026-12-29 (+7d) |  | 13d → 6d |
| SDR-2-PRO-DEL-E-1080 | Lighting Panels Delivery | 2026-10-19 → 2026-10-26 (+7d) | 2026-12-22 → 2026-12-29 (+7d) |  | 6d → 0d |
| SDR-2-PRO-DEL-E-1090 | KWH Meter with mounting frame Delivery | 2026-10-19 → 2026-10-26 (+7d) | 2026-12-07 → 2026-12-14 (+7d) |  | 12d → 5d |
| SDR-2-PRO-DEL-E-1100 | Main Feeder Pillar Manufacture and Delivery | 2026-10-19 → 2026-10-26 (+7d) | 2026-12-07 → 2026-12-14 (+7d) |  | 21d → 15d |
| SDR-2-PRO-DEL-E-1110 | CCTV Poles including all hardwares Delivery | 2026-10-19 → 2026-10-26 (+7d) | 2026-12-22 → 2026-12-29 (+7d) |  | 6d → 0d |
| SDR-2-PRO-DEL-E-1120 | CCTV Cables "Power" Delivery | 2026-10-19 → 2026-10-26 (+7d) | 2026-12-22 → 2026-12-29 (+7d) |  | 6d → 0d |
| SDR-2-PRO-DEL-E-1130 | CCTV Cables "CAT6" Delivery | 2026-10-19 → 2026-10-26 (+7d) | 2026-12-02 → 2026-12-09 (+7d) |  | 2d → 1d |
| SDR-2-PRO-DEL-E-1150 | CCTV System,Servers & WorkStations Delivery | 2026-10-19 → 2026-10-26 (+7d) | 2026-12-07 → 2026-12-14 (+7d) |  | 28d → 23d |
| SDR-2-PRO-DEL-E-1200 | CCTV Solar System Delivery | 2026-10-19 → 2026-10-26 (+7d) | 2026-12-12 → 2026-12-19 (+7d) |  | 41d → 35d |
| 4 | **Materials Staging Time** |  | 2027-02-21 → 2027-03-01 (+8d) |  |  |
| 1 | **Civil** |  | 2027-02-21 → 2027-03-01 (+8d) |  |  |
| SDR-2-PRO-ST-C-1050 | Interlock Tiles staging |  | 2026-11-12 → 2026-11-19 (+7d) | 10% → 15% | 107.1d → 100.1d |
| SDR-2-PRO-ST-C-1030 | Kerbstone staging |  | 2026-11-28 → 2026-12-05 (+7d) | 10% → 15% | 70.1d → 63.1d |
| SDR-2-PRO-ST-C-1020 | Asphalt Mix staging | 2027-01-05 → 2026-10-01 A (-96d) | 2027-01-05 → 2027-01-12 (+7d) | 0% → 40% | 28.2d → 31.2d |

| ID | Task | Start | Finish | Complete | Total float |
| --- | --- | --- | --- | --- | --- |
| SDR-2-PRO-ST-C-1090 | Protection Bollards for CCTV Pole staging | 2026-11-24 → 2026-12-01 (+7d) | 2026-11-27 → 2026-12-04 (+7d) |  | 95d → 88d |
| SDR-2-PRO-ST-C-1060 | Traffic Signage staging | 2026-12-17 → 2026-12-24 (+7d) | 2026-12-20 → 2026-12-27 (+7d) |  | 126d → 119d |
| SDR-2-PRO-ST-C-1080 | Fence for Electrical works staging | 2026-12-21 → 2026-12-28 (+7d) | 2026-12-24 → 2026-12-31 (+7d) |  | 21d → 16d |
| SDR-2-PRO-ST-C-1100 | Protection (Guard rail) for Fire hydrant staging | 2027-01-02 → 2027-01-09 (+7d) | 2027-01-05 → 2027-01-12 (+7d) |  | 21d → 14d |
| SDR-2-PRO-ST-C-1040 | Road Marking staging | 2027-02-18 → 2027-02-26 (+8d) | 2027-02-21 → 2027-03-01 (+8d) |  | 30d → 23d |
| 3 | **Electrical** |  | 2027-01-01 → 2027-01-08 (+7d) |  |  |
| SDR-2-PRO-ST-E-1030 | Street Lighting Poles staging | 2026-10-19 → 2026-10-26 (+7d) | 2026-10-28 → 2026-11-04 (+7d) |  | 24d → 17d |
| SDR-2-PRO-ST-E-1040 | Street Lighting Fixtures staging | 2026-10-19 → 2026-10-26 (+7d) | 2026-10-28 → 2026-11-04 (+7d) |  | 24d → 17d |
| SDR-2-PRO-ST-E-1100 | Unit Substation staging | 2026-10-19 → 2026-10-26 (+7d) | 2026-10-28 → 2026-11-04 (+7d) |  | 90d → 83d |
| SDR-2-PRO-ST-E-1110 | Lighting Panels staging | 2026-10-19 → 2026-10-26 (+7d) | 2026-10-28 → 2026-11-04 (+7d) |  | 51d → 44d |
| SDR-2-PRO-ST-E-1130 | Main Feeder Pillar staging | 2026-10-21 → 2026-10-28 (+7d) | 2026-10-30 → 2026-11-06 (+7d) |  | 49d → 42d |
| SDR-2-PRO-ST-E-1140 | PECD Ducts for CCTV network staging | 2026-11-25 → 2026-12-02 (+7d) | 2026-12-04 → 2026-12-11 (+7d) |  | 24d → 18d |
| SDR-2-PRO-ST-E-1170 | CCTV Cables "CAT6" staging | 2026-12-03 → 2026-12-10 (+7d) | 2026-12-12 → 2026-12-19 (+7d) |  | 16d → 10d |
| SDR-2-PRO-ST-E-1120 | KWH Meter with mounting frame staging | 2026-12-08 → 2026-12-15 (+7d) | 2026-12-17 → 2026-12-24 (+7d) |  | 12d → 5d |
| SDR-2-PRO-ST-E-1190 | CCTV System,Servers & WorkStations staging | 2026-12-08 → 2026-12-15 (+7d) | 2026-12-17 → 2026-12-24 (+7d) |  | 28d → 23d |
| SDR-2-PRO-ST-E-1240 | CCTV Solar System staging | 2026-12-13 → 2026-12-20 (+7d) | 2026-12-22 → 2026-12-29 (+7d) |  | 41d → 35d |
| SDR-2-PRO-ST-E-1150 | CCTV Poles including all hardwares staging | 2026-12-23 → 2026-12-30 (+7d) | 2027-01-01 → 2027-01-08 (+7d) |  | 13d → 8d |
| SDR-2-PRO-ST-E-1160 | CCTV Cables "Power" staging | 2026-12-23 → 2026-12-30 (+7d) | 2027-01-01 → 2027-01-08 (+7d) |  | 13d → 8d |
| RO | **ROAD WORKS** |  | 2027-05-15 → 2027-05-27 (+12d) |  |  |
| ZA | **ZONE A** |  | 2027-05-15 → 2027-05-27 (+12d) |  |  |
| 1 | **ROAD WORKS IN ( PH2-COL-MC10 )** |  | 2027-05-15 → 2027-05-27 (+12d) |  |  |
| SDR-2-CON-RW-ZA-1100 | Asphalt works 3nd layer with RC-02 | 2027-01-12 → 2026-10-22 A (-82d) |  | 0% → 20% | 24.2d → 26.2d |
| 4 | **Kerbstone Installation** | 2026-11-28 → 2026-12-05 (+7d) | 2027-02-24 → 2027-02-21 (-3d) |  |  |
| SDR-2-CON-RW-ZA-3400 | Kerbstone Installation "all Types" Part1 | 2026-11-28 → 2026-12-05 (+7d) | 2026-12-19 → 2026-12-26 (+7d) |  | 60.1d → 54.1d |
| SDR-2-CON-RW-ZA-1110 | Kerbstone Installation "all Types" Part2 | 2027-01-30 → 2027-01-27 (-3d) | 2027-02-24 → 2027-02-21 (-3d) |  | 24.2d → 26.2d |
| 5 | **Interlock Installation** | 2027-02-18 → 2027-02-27 (+9d) | 2027-03-20 → 2027-03-27 (+7d) |  |  |
| SDR-2-CON-RW-ZA-1120 | Interlock Installation | 2027-02-18 → 2027-02-27 (+9d) | 2027-03-20 → 2027-03-27 (+7d) |  | 8d → 2d |
| 6 | **Road Marking** | 2027-03-21 → 2027-03-28 (+7d) | 2027-04-21 → 2027-04-28 (+7d) |  |  |
| SDR-2-CON-RW-ZA-1130 | Retroreflective Thermoplastic White Traffic lines | 2027-03-21 → 2027-03-28 (+7d) | 2027-04-05 → 2027-04-12 (+7d) |  | 8d → 2d |
| SDR-2-CON-RW-ZA-1140 | Retroreflective Thermoplastic Yellow, Traffic lines | 2027-04-06 → 2027-04-13 (+7d) | 2027-04-21 → 2027-04-28 (+7d) |  | 8d → 2d |
| 7 | **Traffic Signage** | 2027-04-22 → 2027-04-29 (+7d) | 2027-05-15 → 2027-05-27 (+12d) |  |  |
| SDR-2-CON-RW-ZA-1150 | Single post-Traffic signs Installation | 2027-04-22 → 2027-04-29 (+7d) | 2027-05-15 → 2027-05-27 (+12d) |  | 8d → 2d |
| 8 | **ROAD WORKS IN ( PH2-COL-MC20 )** |  | 2027-05-03 → 2027-05-10 (+7d) |  |  |
| 3 | **Asphalt Works** |  | 2026-12-10 → 2026-12-17 (+7d) |  |  |
| SDR-2-CON-RW-ZA-1230 | Asphalt works 1st Layer with MC-01 |  | 2026-10-28 → 2026-11-04 (+7d) | 30% → 90% | 58d → 52d |
| SDR-2-CON-RW-ZA-1240 | Asphalt works 2nd layer with RC-01 | 2026-10-29 → 2026-11-05 (+7d) | 2026-11-18 → 2026-11-25 (+7d) |  | 58d → 52d |
| SDR-2-CON-RW-ZA-2840 | Asphalt Works 3 rd Layer with RC-02 | 2026-11-19 → 2026-11-26 (+7d) | 2026-12-10 → 2026-12-17 (+7d) |  | 58d → 52d |
| 4 | **Kerbstone Installation** | 2027-01-06 → 2027-01-13 (+7d) | 2027-02-20 → 2027-02-28 (+8d) |  |  |
| SDR-2-CON-RW-ZA-3410 | Kerbstone Installation "all Types" Part 1 | 2027-01-06 → 2027-01-13 (+7d) | 2027-01-26 → 2027-02-02 (+7d) |  | 18d → 12d |
| SDR-2-CON-RW-ZA-1250 | Kerbstone Installation "all Types" Part 2 | 2027-01-27 → 2027-02-03 (+7d) | 2027-02-20 → 2027-02-28 (+8d) |  | 18d → 12d |
| 5 | **Interlock Installation** | 2027-02-21 → 2027-03-01 (+8d) | 2027-03-22 → 2027-03-29 (+7d) |  |  |
| SDR-2-CON-RW-ZA-1260 | Interlock Installation | 2027-02-21 → 2027-03-01 (+8d) | 2027-03-22 → 2027-03-29 (+7d) |  | 18d → 12d |
| 6 | **Road Marking** | 2027-03-23 → 2027-03-30 (+7d) | 2027-04-12 → 2027-04-19 (+7d) |  |  |
| SDR-2-CON-RW-ZA-1270 | Retroreflective Thermoplastic White Traffic lines | 2027-03-23 → 2027-03-30 (+7d) | 2027-04-04 → 2027-04-11 (+7d) |  | 18d → 12d |
| SDR-2-CON-RW-ZA-1280 | Retroreflective Thermoplastic Yellow, Traffic lines | 2027-04-05 → 2027-04-12 (+7d) | 2027-04-12 → 2027-04-19 (+7d) |  | 18d → 12d |
| 7 | **Traffic Signage** | 2027-04-13 → 2027-04-20 (+7d) | 2027-05-03 → 2027-05-10 (+7d) |  |  |
| SDR-2-CON-RW-ZA-1290 | Single post-Traffic signs Installation | 2027-04-13 → 2027-04-20 (+7d) | 2027-05-03 → 2027-05-10 (+7d) |  | 18d → 12d |
| 13 | **ROAD WORKS IN ( PH2-A-MCI0 )** |  | 2027-04-29 → 2027-05-06 (+7d) |  |  |
| 11 | **Subgrade** |  | 2026-11-10 → 2026-11-17 (+7d) |  |  |
| SDR-2-CON-RW-ZA-1320 | Subgrade layer works |  | 2026-11-10 → 2026-11-17 (+7d) | 25% → 30% | 17d → 11d |
| 2 | **Base Course** | 2026-11-11 → 2026-11-18 (+7d) | 2026-12-03 → 2026-12-10 (+7d) |  |  |
| SDR-2-CON-RW-ZA-1350 | Aggregate base course layer | 2026-11-11 → 2026-11-18 (+7d) | 2026-12-03 → 2026-12-10 (+7d) |  | 17d → 11d |
| 8 | **Demolition Work** | 2026-12-05 → 2026-12-12 (+7d) | 2026-12-09 → 2026-12-16 (+7d) |  |  |
| SDR-2-CON-RW-ZA-1360 | Milling of wearing course | 2026-12-05 → 2026-12-12 (+7d) | 2026-12-09 → 2026-12-16 (+7d) |  | 17d → 11d |
| 3 | **Asphalt Works** | 2026-12-10 → 2026-12-17 (+7d) | 2027-01-09 → 2027-01-16 (+7d) |  |  |
| SDR-2-CON-RW-ZA-1370 | Asphalt works 1st Layer with MC-01 | 2026-12-10 → 2026-12-17 (+7d) | 2026-12-15 → 2026-12-22 (+7d) |  | 17d → 11d |
| SDR-2-CON-RW-ZA-1380 | Asphalt works 2nd layer with RC-02 | 2026-12-16 → 2026-12-23 (+7d) | 2027-01-09 → 2027-01-16 (+7d) |  | 17d → 11d |
| 4 | **Kerbstone Installation** | 2026-10-19 → 2026-10-26 (+7d) | 2027-02-02 → 2027-02-09 (+7d) |  |  |
| SDR-2-CON-RW-ZA-3420 | Kerbstone Installation "all Types" Part 1 | 2026-10-19 → 2026-10-26 (+7d) | 2026-11-08 → 2026-11-15 (+7d) |  | 31d → 25d |
| SDR-2-CON-RW-ZA-1390 | Kerbstone Installation "all Types" Part 2 | 2027-01-10 → 2027-01-17 (+7d) | 2027-02-02 → 2027-02-09 (+7d) |  | 17d → 11d |
| 5 | **Interlock Installation** | 2027-02-03 → 2027-02-10 (+7d) | 2027-02-28 → 2027-03-07 (+7d) |  |  |
| SDR-2-CON-RW-ZA-1400 | Interlock Installation | 2027-02-03 → 2027-02-10 (+7d) | 2027-02-28 → 2027-03-07 (+7d) |  | 17d → 11d |
| 6 | **Road Marking** | 2027-03-01 → 2027-03-08 (+7d) | 2027-04-06 → 2027-04-13 (+7d) |  |  |
| SDR-2-CON-RW-ZA-1410 | Retroreflective Thermoplastic White Traffic lines | 2027-03-01 → 2027-03-08 (+7d) | 2027-03-21 → 2027-03-28 (+7d) |  | 17d → 11d |
| SDR-2-CON-RW-ZA-1420 | Retroreflective Thermoplastic Yellow, Traffic lines | 2027-03-22 → 2027-03-29 (+7d) | 2027-04-06 → 2027-04-13 (+7d) |  | 17d → 11d |
| 7 | **Traffic Signage** | 2027-04-07 → 2027-04-14 (+7d) | 2027-04-29 → 2027-05-06 (+7d) |  |  |
| SDR-2-CON-RW-ZA-1430 | Single post-Traffic signs Installation | 2027-04-07 → 2027-04-14 (+7d) | 2027-04-29 → 2027-05-06 (+7d) |  | 17d → 11d |
| 2 | **ROAD WORKS IN ( PH2-A-MCA0 )** |  | 2027-04-19 → 2027-04-26 (+7d) |  |  |
| 11 | **Subgrade** |  | 2026-10-22 → 2026-10-29 (+7d) |  |  |
| SDR-2-CON-RW-ZA-1460 | Subgrade layer works |  | 2026-10-22 → 2026-10-29 (+7d) | 40% → 45% | 25d → 19d |

| ID | Task | Start | Finish | Complete | Total float |
| --- | --- | --- | --- | --- | --- |
| 9 | **Earth Works Plot** |  | 2026-11-16 → 2026-11-23 (+7d) |  |  |
| SDR-2-CON-RW-ZA-1470 | Plot Excavation for cuttings (all types of soil) |  | 2026-11-16 → 2026-11-23 (+7d) | 40% → 45% | 25d → 19d |
| SDR-2-CON-RW-ZA-1480 | Embankments to the Plot 2 Layer | 2026-10-19 → 2026-10-26 (+7d) | 2026-11-11 → 2026-11-18 (+7d) |  | 44d → 38d |
| 2 | **Base Course** | 2026-10-24 → 2026-10-31 (+7d) | 2026-11-09 → 2026-11-16 (+7d) |  |  |
| SDR-2-CON-RW-ZA-1490 | Aggregate base course layer | 2026-10-24 → 2026-10-31 (+7d) | 2026-11-09 → 2026-11-16 (+7d) |  | 30d → 24d |
| 8 | **Demolition Work** | 2026-11-10 → 2026-11-17 (+7d) | 2026-11-14 → 2026-11-21 (+7d) |  |  |
| SDR-2-CON-RW-ZA-1500 | Milling of wearing course | 2026-11-10 → 2026-11-17 (+7d) | 2026-11-14 → 2026-11-21 (+7d) |  | 30d → 24d |
| 3 | **Asphalt Works** | 2026-11-15 → 2026-11-22 (+7d) | 2026-12-28 → 2027-01-04 (+7d) |  |  |
| SDR-2-CON-RW-ZA-1510 | Asphalt works 1st Layer with MC-01 | 2026-11-15 → 2026-11-22 (+7d) | 2026-12-05 → 2026-12-12 (+7d) |  | 30d → 24d |
| SDR-2-CON-RW-ZA-1520 | Asphalt works 2nd layer with RC-02 | 2026-12-06 → 2026-12-13 (+7d) | 2026-12-28 → 2027-01-04 (+7d) |  | 30d → 24d |
| 4 | **Kerbstone Installation** | 2026-10-24 → 2026-10-31 (+7d) | 2027-01-21 → 2027-01-28 (+7d) |  |  |
| SDR-2-CON-RW-ZA-3440 | Kerbstone Installation "all Types" Part 1 | 2026-10-24 → 2026-10-31 (+7d) | 2026-11-16 → 2026-11-23 (+7d) |  | 66d → 60d |
| SDR-2-CON-RW-ZA-1530 | Kerbstone Installation "all Types" Part 2 | 2026-12-29 → 2027-01-05 (+7d) | 2027-01-21 → 2027-01-28 (+7d) |  | 30d → 24d |
| 5 | **Interlock Installation** | 2027-01-23 → 2027-01-30 (+7d) | 2027-02-15 → 2027-02-23 (+8d) |  |  |
| SDR-2-CON-RW-ZA-1540 | Interlock Installation | 2027-01-23 → 2027-01-30 (+7d) | 2027-02-15 → 2027-02-23 (+8d) |  | 30d → 24d |
| 6 | **Road Marking** | 2027-02-16 → 2027-02-24 (+8d) | 2027-03-27 → 2027-04-03 (+7d) |  |  |
| SDR-2-CON-RW-ZA-1550 | Retroreflective Thermoplastic White Traffic lines | 2027-02-16 → 2027-02-24 (+8d) | 2027-03-04 → 2027-03-16 (+12d) |  | 30d → 24d |
| SDR-2-CON-RW-ZA-1560 | Retroreflective Thermoplastic Yellow, Traffic lines | 2027-03-06 → 2027-03-17 (+11d) | 2027-03-27 → 2027-04-03 (+7d) |  | 30d → 24d |
| 7 | **Traffic Signage** | 2027-03-28 → 2027-04-04 (+7d) | 2027-04-19 → 2027-04-26 (+7d) |  |  |
| SDR-2-CON-RW-ZA-1570 | Single post-Traffic signs Installation | 2027-03-28 → 2027-04-04 (+7d) | 2027-04-19 → 2027-04-26 (+7d) |  | 30d → 24d |
| 3 | **ROAD WORKS IN ( PH2-A-MCB0 )** |  | 2027-04-13 → 2027-04-20 (+7d) |  |  |
| 11 | **Subgrade** |  | 2026-10-19 → 2026-10-26 (+7d) |  |  |
| SDR-2-CON-RW-ZA-1600 | Subgrade layer works |  | 2026-10-19 → 2026-10-26 (+7d) | 40% → 45% | 8d → 2d |
| 9 | **Earth Works Plot** |  | 2026-10-19 → 2026-10-26 (+7d) |  |  |
| SDR-2-CON-RW-ZA-1610 | Plot Excavation for cuttings (all types of soil) |  | 2026-10-19 → 2026-10-26 (+7d) |  | 31d → 25d |
| SDR-2-CON-RW-ZA-1620 | Embankments to the Plot 2 Layer |  | 2026-10-19 → 2026-10-26 (+7d) | 20% → 25% | 134d → 128d |
| 8 | **Demolition Work** | 2026-11-12 → 2026-11-19 (+7d) | 2026-11-15 → 2026-11-22 (+7d) |  |  |
| SDR-2-CON-RW-ZA-1640 | Milling of wearing course | 2026-11-12 → 2026-11-19 (+7d) | 2026-11-15 → 2026-11-22 (+7d) |  | 8d → 2d |
| 2 | **Base Course** | 2026-10-20 → 2026-10-27 (+7d) | 2026-11-11 → 2026-11-18 (+7d) |  |  |
| SDR-2-CON-RW-ZA-1630 | Aggregate base course layer | 2026-10-20 → 2026-10-27 (+7d) | 2026-11-11 → 2026-11-18 (+7d) |  | 8d → 2d |
| 3 | **Asphalt Works** | 2026-11-16 → 2026-11-23 (+7d) | 2026-12-23 → 2026-12-30 (+7d) |  |  |
| SDR-2-CON-RW-ZA-1650 | Asphalt works 1st Layer with MC-01 | 2026-11-16 → 2026-11-23 (+7d) | 2026-12-09 → 2026-12-16 (+7d) |  | 8d → 2d |
| SDR-2-CON-RW-ZA-1660 | Asphalt works 2nd layer with RC-02 | 2026-12-10 → 2026-12-17 (+7d) | 2026-12-23 → 2026-12-30 (+7d) |  | 8d → 2d |
| 4 | **Kerbstone Installation** | 2026-10-20 → 2026-10-27 (+7d) | 2027-01-16 → 2027-01-23 (+7d) |  |  |
| SDR-2-CON-RW-ZA-3430 | Kerbstone Installation "all Types" Part 1 | 2026-10-20 → 2026-10-27 (+7d) | 2026-11-11 → 2026-11-18 (+7d) |  | 44d → 38d |
| SDR-2-CON-RW-ZA-1670 | Kerbstone Installation "all Types" Part 2 | 2026-12-24 → 2026-12-31 (+7d) | 2027-01-16 → 2027-01-23 (+7d) |  | 8d → 2d |
| 5 | **Interlock Installation** | 2027-01-17 → 2027-01-24 (+7d) | 2027-02-09 → 2027-02-16 (+7d) |  |  |
| SDR-2-CON-RW-ZA-1680 | Interlock Installation | 2027-01-17 → 2027-01-24 (+7d) | 2027-02-09 → 2027-02-16 (+7d) |  | 8d → 2d |
| 6 | **Road Marking** | 2027-02-10 → 2027-02-17 (+7d) | 2027-03-21 → 2027-03-28 (+7d) |  |  |
| SDR-2-CON-RW-ZA-1690 | Retroreflective Thermoplastic White Traffic lines | 2027-02-10 → 2027-02-17 (+7d) | 2027-02-28 → 2027-03-07 (+7d) |  | 8d → 2d |
| SDR-2-CON-RW-ZA-1700 | Retroreflective Thermoplastic Yellow, Traffic lines | 2027-03-01 → 2027-03-08 (+7d) | 2027-03-21 → 2027-03-28 (+7d) |  | 8d → 2d |
| 7 | **Traffic Signage** | 2027-03-22 → 2027-03-29 (+7d) | 2027-04-13 → 2027-04-20 (+7d) |  |  |
| SDR-2-CON-RW-ZA-1710 | Single post-Traffic signs Installation | 2027-03-22 → 2027-03-29 (+7d) | 2027-04-13 → 2027-04-20 (+7d) |  | 8d → 2d |
| 7 | **ROAD WORKS IN ( PH2-A-MCC0 )** |  | 2027-04-21 → 2027-04-28 (+7d) |  |  |
| SDR-2-CON-RW-ZA-1750 | Plot Excavation for cuttings (all types of soil) |  | 2026-10-19 → 2026-10-26 (+7d) |  | 76d → 70d |
| SDR-2-CON-RW-ZA-1760 | Embankments to the Plot 2 Layer |  | 2026-10-20 → 2026-10-27 (+7d) |  | 111d → 105d |
| 3 | **Asphalt Works** | 2026-12-02 → 2026-12-09 (+7d) | 2027-01-02 → 2027-01-09 (+7d) |  |  |
| SDR-2-CON-RW-ZA-1790 | Asphalt works 1st Layer with MC-01 | 2026-12-02 → 2026-12-09 (+7d) | 2026-12-20 → 2026-12-27 (+7d) |  | 28d → 22d |
| SDR-2-CON-RW-ZA-1800 | Asphalt works 2nd layer with RC-02 | 2026-12-21 → 2026-12-28 (+7d) | 2027-01-02 → 2027-01-09 (+7d) |  | 28d → 22d |
| 4 | **Kerbstone Installation** | 2026-10-19 → 2026-10-26 (+7d) | 2027-01-25 → 2027-02-01 (+7d) |  |  |
| SDR-2-CON-RW-ZA-3450 | Kerbstone Installation "all Types" Part 1 | 2026-10-19 → 2026-10-26 (+7d) | 2026-11-08 → 2026-11-15 (+7d) |  | 76d → 70d |
| SDR-2-CON-RW-ZA-1810 | Kerbstone Installation "all Types" Part 2 | 2027-01-03 → 2027-01-10 (+7d) | 2027-01-25 → 2027-02-01 (+7d) |  | 28d → 22d |
| 5 | **Interlock Installation** | 2027-01-26 → 2027-02-02 (+7d) | 2027-02-18 → 2027-02-27 (+9d) |  |  |
| SDR-2-CON-RW-ZA-1820 | Interlock Installation | 2027-01-26 → 2027-02-02 (+7d) | 2027-02-18 → 2027-02-27 (+9d) |  | 28d → 22d |
| 6 | **Road Marking** | 2027-02-20 → 2027-02-28 (+8d) | 2027-03-29 → 2027-04-05 (+7d) |  |  |
| SDR-2-CON-RW-ZA-1830 | Retroreflective Thermoplastic White Traffic lines | 2027-02-20 → 2027-02-28 (+8d) | 2027-03-08 → 2027-03-20 (+12d) |  | 28d → 22d |
| SDR-2-CON-RW-ZA-1840 | Retroreflective Thermoplastic Yellow, Traffic lines | 2027-03-14 → 2027-03-21 (+7d) | 2027-03-29 → 2027-04-05 (+7d) |  | 28d → 22d |
| 7 | **Traffic Signage** | 2027-03-30 → 2027-04-06 (+7d) | 2027-04-21 → 2027-04-28 (+7d) |  |  |
| SDR-2-CON-RW-ZA-1850 | Single post-Traffic signs Installation | 2027-03-30 → 2027-04-06 (+7d) | 2027-04-21 → 2027-04-28 (+7d) |  | 28d → 22d |
| 4 | **ROAD WORKS IN ( PH2-A-MCD0 )** |  | 2027-04-24 → 2027-05-01 (+7d) |  |  |
| 3 | **Asphalt Works** | 2026-12-16 → 2026-12-23 (+7d) | 2027-01-03 → 2027-01-10 (+7d) |  |  |
| SDR-2-CON-RW-ZA-1930 | Asphalt works 1st Layer with MC-01 | 2026-12-16 → 2026-12-23 (+7d) | 2026-12-26 → 2027-01-02 (+7d) |  | 26d → 20d |
| SDR-2-CON-RW-ZA-1940 | Asphalt works 2nd layer with RC-02 | 2026-12-27 → 2027-01-03 (+7d) | 2027-01-03 → 2027-01-10 (+7d) |  | 26d → 20d |
| 4 | **Kerbstone Installation** | 2026-10-19 → 2026-10-26 (+7d) | 2027-01-27 → 2027-02-03 (+7d) |  |  |
| SDR-2-CON-RW-ZA-3460 | Kerbstone Installation "all Types" Part 1 | 2026-10-19 → 2026-10-26 (+7d) | 2026-11-08 → 2026-11-15 (+7d) |  | 74d → 68d |
| SDR-2-CON-RW-ZA-1950 | Kerbstone Installation "all Types" Part 2 | 2027-01-04 → 2027-01-11 (+7d) | 2027-01-27 → 2027-02-03 (+7d) |  | 26d → 20d |
| 5 | **Interlock Installation** | 2027-01-28 → 2027-02-04 (+7d) | 2027-02-21 → 2027-03-01 (+8d) |  |  |
| SDR-2-CON-RW-ZA-1960 | Interlock Installation | 2027-01-28 → 2027-02-04 (+7d) | 2027-02-21 → 2027-03-01 (+8d) |  | 26d → 20d |
| 6 | **Road Marking** | 2027-02-23 → 2027-03-02 (+7d) | 2027-03-31 → 2027-04-07 (+7d) |  |  |
| SDR-2-CON-RW-ZA-1970 | Retroreflective Thermoplastic White Traffic lines | 2027-02-23 → 2027-03-02 (+7d) | 2027-03-15 → 2027-03-22 (+7d) |  | 26d → 20d |

| ID | Task | Start | Finish | Complete | Total float | Predecessors | Other |
| --- | --- | --- | --- | --- | --- | --- | --- |
| SDR-2-CON-RW-ZA-1980 | Retroreflective Thermoplastic Yellow, Traffic lines | 2027-03-16 → 2027-03-23 (+7d) | 2027-03-31 → 2027-04-07 (+7d) |  | 26d → 20d |  |  |
| 7 | **Traffic Signage** | 2027-04-01 → 2027-04-08 (+7d) | 2027-04-24 → 2027-05-01 (+7d) |  |  |  |  |
| SDR-2-CON-RW-ZA-1990 | Single post-Traffic signs Installation | 2027-04-01 → 2027-04-08 (+7d) | 2027-04-24 → 2027-05-01 (+7d) |  | 26d → 20d |  |  |
| 5 | **ROAD WORKS IN ( PH2-A-MCE0 )** |  | 2027-04-08 → 2027-04-15 (+7d) |  |  |  |  |
| 11 | **Subgrade** |  | 2026-11-10 → 2026-11-17 (+7d) |  |  |  |  |
| SDR-2-CON-RW-ZA-2020 | Subgrade layer works |  | 2026-11-10 → 2026-11-17 (+7d) | 20% → 50% | 28d → 22d |  |  |
| 9 | **Earth Works Plot** |  | 2026-11-10 → 2026-11-17 (+7d) |  |  |  |  |
| SDR-2-CON-RW-ZA-3190 | Embankments to the Plot 2 Layer | 2026-07-13 A → 2026-06-14 A (-29d) | 2026-11-10 → 2026-11-17 (+7d) | 30% → 75% | 72d → 66d | SDR-2-CON-RW-ZA-3110, SDR-2-CON-RW-ZA-2040 FF → SDR-2-CON-RW-ZA-2030 FF | resources SIC- Cost; Excavator [7.88 h]; Excavator Operator [40.74 h]; Dumper Operator [40.74 h]; Dumper Truck [390.14 h]; Grader [30 h]; Grader Operator [40.74 h]; Loader [50.04 h]; Loader Operator [40.74 h]; Un-Skilled Labor [40.74 h]; Supervisor [40.74 h]; Skilled Labor [40.74 h] → SIC- Cost; Excavator [7.88 h]; Excavator Operator [40.74 h]; Dumper Operator [40.74 h]; Dumper Truck [30 h]; Grader [30 h]; Grader Operator [40.74 h]; Loader [40 h]; Loader Operator [40.74 h]; Un-Skilled Labor [40.74 h]; Supervisor [40.74 h]; Skilled Labor [40.74 h] |
| SDR-2-CON-RW-ZA-2030 | Plot Excavation for cuttings (all types of soil) |  | 2026-11-10 → 2026-11-17 (+7d) | 50% → 55% | 53d → 47d |  |  |
| SDR-2-CON-RW-ZA-2040 | Embankments to the Plot 1 Layer | 2026-06-14 A → 2026-07-13 A (+29d) | 2026-11-10 → 2026-11-17 (+7d) | 75% → 90% | 72d → 66d | SDR-2-CON-RW-ZA-2030 FF → SDR-2-CON-RW-ZA-3110, SDR-2-CON-RW-ZA-3190 FF | resources SIC- Cost; Excavator [7.88 h]; Excavator Operator [40.74 h]; Dumper Operator [40.74 h]; Dumper Truck [30 h]; Grader [30 h]; Grader Operator [40.74 h]; Loader [40 h]; Loader Operator [40.74 h]; Un-Skilled Labor [40.74 h]; Supervisor [40.74 h]; Skilled Labor [40.74 h] → SIC- Cost; Excavator [7.88 h]; Excavator Operator [40.74 h]; Dumper Operator [40.74 h]; Dumper Truck [390.14 h]; Grader [30 h]; Grader Operator [40.74 h]; Loader [50.04 h]; Loader Operator [40.74 h]; Un-Skilled Labor [40.74 h]; Supervisor [40.74 h]; Skilled Labor [40.74 h] |
| 2 | **Base Course** | 2026-11-11 → 2026-11-18 (+7d) | 2026-11-19 → 2026-11-26 (+7d) |  |  |  |  |
| SDR-2-CON-RW-ZA-2050 | Aggregate base course layer | 2026-11-11 → 2026-11-18 (+7d) | 2026-11-19 → 2026-11-26 (+7d) |  | 39d → 33d |  |  |
| 8 | **Demolition Work** | 2026-11-21 → 2026-11-28 (+7d) | 2026-11-22 → 2026-11-29 (+7d) |  |  |  |  |
| SDR-2-CON-RW-ZA-2060 | Milling of wearing course | 2026-11-21 → 2026-11-28 (+7d) | 2026-11-22 → 2026-11-29 (+7d) |  | 39d → 33d |  |  |
| 3 | **Asphalt Works** | 2026-11-23 → 2026-11-30 (+7d) | 2026-12-19 → 2026-12-26 (+7d) |  |  |  |  |
| SDR-2-CON-RW-ZA-2070 | Asphalt works 1st Layer with MC-01 | 2026-11-23 → 2026-11-30 (+7d) | 2026-12-03 → 2026-12-10 (+7d) |  | 39d → 33d |  |  |
| SDR-2-CON-RW-ZA-2080 | Asphalt works 2nd layer with RC-02 | 2026-12-05 → 2026-12-12 (+7d) | 2026-12-19 → 2026-12-26 (+7d) |  | 39d → 33d |  |  |
| 4 | **Kerbstone Installation** | 2026-11-11 → 2026-11-18 (+7d) | 2027-01-12 → 2027-01-19 (+7d) |  |  |  |  |
| SDR-2-CON-RW-ZA-3470 | Kerbstone Installation "all Types" Part 1 | 2026-11-11 → 2026-11-18 (+7d) | 2026-12-01 → 2026-12-08 (+7d) |  | 28d → 22d |  |  |
| SDR-2-CON-RW-ZA-2090 | Kerbstone Installation "all Types" Part 2 | 2026-12-20 → 2026-12-27 (+7d) | 2027-01-12 → 2027-01-19 (+7d) |  | 39d → 33d |  |  |
| 5 | **Interlock Installation** | 2027-01-13 → 2027-01-20 (+7d) | 2027-02-06 → 2027-02-13 (+7d) |  |  |  |  |
| SDR-2-CON-RW-ZA-2100 | Interlock Installation | 2027-01-13 → 2027-01-20 (+7d) | 2027-02-06 → 2027-02-13 (+7d) |  | 39d → 33d |  |  |
| 6 | **Road Marking** | 2027-02-07 → 2027-02-14 (+7d) | 2027-03-16 → 2027-03-23 (+7d) |  |  |  |  |
| SDR-2-CON-RW-ZA-2110 | Retroreflective Thermoplastic White Traffic lines | 2027-02-07 → 2027-02-14 (+7d) | 2027-02-23 → 2027-03-02 (+7d) |  | 39d → 33d |  |  |
| SDR-2-CON-RW-ZA-2120 | Retroreflective Thermoplastic Yellow, Traffic lines | 2027-02-24 → 2027-03-03 (+7d) | 2027-03-16 → 2027-03-23 (+7d) |  | 39d → 33d |  |  |
| 7 | **Traffic Signage** | 2027-03-17 → 2027-03-24 (+7d) | 2027-04-08 → 2027-04-15 (+7d) |  |  |  |  |
| SDR-2-CON-RW-ZA-2130 | Single post-Traffic signs Installation | 2027-03-17 → 2027-03-24 (+7d) | 2027-04-08 → 2027-04-15 (+7d) |  | 39d → 33d | SDR-2-CON-RW-ZA-2120, SDR-2-CON-RW-ZA-3190 → SDR-2-CON-RW-ZA-2120, SDR-2-CON-RW-ZA-2040 |  |
| 6 | **ROAD WORKS IN ( PH2-A-MCF0 )** |  | 2027-04-10 → 2027-04-17 (+7d) |  |  |  |  |
| 11 | **Subgrade** |  | 2026-11-10 → 2026-11-17 (+7d) |  |  |  |  |
| SDR-2-CON-RW-ZA-2160 | Subgrade layer works |  | 2026-11-10 → 2026-11-17 (+7d) | 20% → 90% | 26d → 20d |  |  |
| 2 | **Base Course** | 2026-11-11 → 2026-11-18 (+7d) | 2026-11-24 → 2026-12-01 (+7d) |  |  |  |  |
| SDR-2-CON-RW-ZA-2190 | Aggregate base course layer | 2026-11-11 → 2026-11-18 (+7d) | 2026-11-24 → 2026-12-01 (+7d) |  | 38d → 32d |  |  |
| 8 | **Demolition Work** | 2026-11-25 → 2026-12-02 (+7d) | 2026-11-26 → 2026-12-03 (+7d) |  |  |  |  |
| SDR-2-CON-RW-ZA-2200 | Milling of wearing course | 2026-11-25 → 2026-12-02 (+7d) | 2026-11-26 → 2026-12-03 (+7d) |  | 38d → 32d |  |  |
| 3 | **Asphalt Works** | 2026-11-28 → 2026-12-05 (+7d) | 2026-12-20 → 2026-12-27 (+7d) |  |  |  |  |
| SDR-2-CON-RW-ZA-2210 | Asphalt works 1st Layer with MC-01 | 2026-11-28 → 2026-12-05 (+7d) | 2026-12-06 → 2026-12-13 (+7d) |  | 38d → 32d |  |  |
| SDR-2-CON-RW-ZA-2220 | Asphalt works 2nd layer with RC-02 | 2026-12-07 → 2026-12-14 (+7d) | 2026-12-20 → 2026-12-27 (+7d) |  | 38d → 32d |  |  |
| 4 | **Kerbstone Installation** | 2026-11-11 → 2026-11-18 (+7d) | 2027-01-13 → 2027-01-20 (+7d) |  |  |  |  |
| SDR-2-CON-RW-ZA-3480 | Kerbstone Installation "all Types" Part 1 | 2026-11-11 → 2026-11-18 (+7d) | 2026-12-01 → 2026-12-08 (+7d) |  | 26d → 20d |  |  |
| SDR-2-CON-RW-ZA-2230 | Kerbstone Installation "all Types" Part 2 | 2026-12-21 → 2026-12-28 (+7d) | 2027-01-13 → 2027-01-20 (+7d) |  | 38d → 32d |  |  |
| 5 | **Interlock Installation** | 2027-01-14 → 2027-01-21 (+7d) | 2027-02-07 → 2027-02-14 (+7d) |  |  |  |  |
| SDR-2-CON-RW-ZA-2240 | Interlock Installation | 2027-01-14 → 2027-01-21 (+7d) | 2027-02-07 → 2027-02-14 (+7d) |  | 38d → 32d |  |  |
| 6 | **Road Marking** | 2027-02-08 → 2027-02-15 (+7d) | 2027-03-17 → 2027-03-24 (+7d) |  |  |  |  |
| SDR-2-CON-RW-ZA-2250 | Retroreflective Thermoplastic White Traffic lines | 2027-02-08 → 2027-02-15 (+7d) | 2027-02-24 → 2027-03-03 (+7d) |  | 38d → 32d |  |  |
| SDR-2-CON-RW-ZA-2260 | Retroreflective Thermoplastic Yellow, Traffic lines | 2027-02-25 → 2027-03-04 (+7d) | 2027-03-17 → 2027-03-24 (+7d) |  | 38d → 32d |  |  |
| 7 | **Traffic Signage** | 2027-03-18 → 2027-03-25 (+7d) | 2027-04-10 → 2027-04-17 (+7d) |  |  |  |  |
| SDR-2-CON-RW-ZA-2270 | Single post-Traffic signs Installation | 2027-03-18 → 2027-03-25 (+7d) | 2027-04-10 → 2027-04-17 (+7d) |  | 38d → 32d |  |  |
| 9 | **ROAD WORKS IN ( PH2-A-MCG0 )** |  | 2027-03-25 → 2027-04-01 (+7d) |  |  |  |  |
| 11 | **Subgrade** |  | 2026-11-08 → 2026-11-15 (+7d) |  |  |  |  |
| SDR-2-CON-RW-ZA-2300 | Subgrade layer works |  | 2026-11-08 → 2026-11-15 (+7d) | 20% → 95% | 15d → 9d |  |  |
| SDR-2-CON-RW-ZA-2320 | Embankments to the Plot 2 Layer |  |  |  |  | SDR-2-CON-RW-ZA-3270, SDR-2-CON-RW-ZA-3270 FF, SDR-2-CON-RW-ZA-3230, SDR-2-CON-RW-ZA-2040 FF → SDR-2-CON-RW-ZA-3270, SDR-2-CON-RW-ZA-3270 FF, SDR-2-CON-RW-ZA-3230, SDR-2-CON-RW-ZA-3190 FF |  |
| 2 | **Base Course** | 2026-11-09 → 2026-10-24 (-16d) | 2026-11-16 → 2026-11-23 (+7d) |  |  |  |  |
| SDR-2-CON-RW-ZA-2330 | Aggregate base course layer | 2026-11-09 → 2026-10-24 A (-16d) | 2026-11-16 → 2026-11-23 (+7d) | 0% → 25% | 21d → 15d |  |  |
| 8 | **Demolition Work** | 2026-11-17 → 2026-11-24 (+7d) | 2026-11-18 → 2026-11-25 (+7d) |  |  |  |  |
| SDR-2-CON-RW-ZA-2340 | Milling of wearing course | 2026-11-17 → 2026-11-24 (+7d) | 2026-11-18 → 2026-11-25 (+7d) |  | 21d → 15d |  |  |
| 3 | **Asphalt Works** | 2026-11-19 → 2026-11-26 (+7d) | 2026-12-05 → 2026-12-12 (+7d) |  |  |  |  |
| SDR-2-CON-RW-ZA-2350 | Asphalt works 1st Layer with MC-01 | 2026-11-19 → 2026-11-26 (+7d) | 2026-11-22 → 2026-11-29 (+7d) |  | 21d → 15d |  |  |
| SDR-2-CON-RW-ZA-2360 | Asphalt works 2nd layer with RC-02 | 2026-11-23 → 2026-11-30 (+7d) | 2026-12-05 → 2026-12-12 (+7d) |  | 36d → 30d |  |  |
| 4 | **Kerbstone Installation** | 2026-11-09 → 2026-11-16 (+7d) | 2026-12-29 → 2027-01-05 (+7d) |  |  |  |  |
| SDR-2-CON-RW-ZA-3490 | Kerbstone Installation "all Types" Part 1 | 2026-11-09 → 2026-11-16 (+7d) | 2026-11-29 → 2026-12-06 (+7d) |  | 15d → 9d |  |  |
| SDR-2-CON-RW-ZA-2370 | Kerbstone Installation "all Types" Part 2 | 2026-12-06 → 2026-12-13 (+7d) | 2026-12-29 → 2027-01-05 (+7d) |  | 36d → 30d |  |  |
| 5 | **Interlock Installation** | 2026-12-30 → 2027-01-06 (+7d) | 2027-01-23 → 2027-01-30 (+7d) |  |  |  |  |
| SDR-2-CON-RW-ZA-2380 | Interlock Installation | 2026-12-30 → 2027-01-06 (+7d) | 2027-01-23 → 2027-01-30 (+7d) |  | 37d → 31d |  |  |
| 6 | **Road Marking** | 2027-01-24 → 2027-01-31 (+7d) | 2027-02-25 → 2027-03-04 (+7d) |  |  |  |  |
| SDR-2-CON-RW-ZA-2390 | Retroreflective Thermoplastic White Traffic lines | 2027-01-24 → 2027-01-31 (+7d) | 2027-02-08 → 2027-02-15 (+7d) |  | 37d → 31d |  |  |
| SDR-2-CON-RW-ZA-2400 | Retroreflective Thermoplastic Yellow, Traffic lines | 2027-02-09 → 2027-02-16 (+7d) | 2027-02-25 → 2027-03-04 (+7d) |  | 37d → 31d |  |  |
| 7 | **Traffic Signage** | 2027-02-27 → 2027-03-06 (+7d) | 2027-03-25 → 2027-04-01 (+7d) |  |  |  |  |
| SDR-2-CON-RW-ZA-2410 | Single post-Traffic signs Installation | 2027-02-27 → 2027-03-06 (+7d) | 2027-03-25 → 2027-04-01 (+7d) |  | 37d → 31d |  |  |
| 10 | **ROAD WORKS IN ( PH2-A-MCH0 )** |  | 2027-04-04 → 2027-04-11 (+7d) |  |  |  |  |
| 11 | **Subgrade** |  | 2026-10-27 → 2026-11-03 (+7d) |  |  |  |  |

| ID | Task | Start | Finish | Complete | Total float | Predecessors |
| --- | --- | --- | --- | --- | --- | --- |
| SDR-2-CON-RW-ZA-2440 | Subgrade layer works |  | 2026-10-27 → 2026-11-03 (+7d) | 20% → 25% | 14d → 8d |  |
| 9 | **Earth Works Plot** |  | 2026-11-12 → 2026-11-19 (+7d) |  |  |  |
| SDR-2-CON-RW-ZA-3310 | Embankments to the Plot 1 Layer |  | 2026-10-19 → 2026-10-26 (+7d) |  | 45d → 39d |  |
| SDR-2-CON-RW-ZA-2460 | Embankments to the Plot 2 Layer |  | 2026-11-12 → 2026-11-19 (+7d) |  | 45d → 39d |  |
| 2 | **Base Course** | 2026-10-28 → 2026-11-04 (+7d) | 2026-11-14 → 2026-11-21 (+7d) |  |  |  |
| SDR-2-CON-RW-ZA-2470 | Aggregate base course layer | 2026-10-28 → 2026-11-04 (+7d) | 2026-11-14 → 2026-11-21 (+7d) |  | 15d → 9d |  |
| 8 | **Demolition Work** | 2026-11-15 → 2026-11-22 (+7d) | 2026-11-16 → 2026-11-23 (+7d) |  |  |  |
| SDR-2-CON-RW-ZA-2480 | Milling of wearing course | 2026-11-15 → 2026-11-22 (+7d) | 2026-11-16 → 2026-11-23 (+7d) |  | 15d → 9d |  |
| 3 | **Asphalt Works** | 2026-11-18 → 2026-11-25 (+7d) | 2026-12-14 → 2026-12-21 (+7d) |  |  |  |
| SDR-2-CON-RW-ZA-2490 | Asphalt works 1st Layer with MC-01 | 2026-11-18 → 2026-11-25 (+7d) | 2026-12-01 → 2026-12-08 (+7d) |  | 14d → 8d |  |
| SDR-2-CON-RW-ZA-2500 | Asphalt works 2nd layer with RC-02 | 2026-12-02 → 2026-12-09 (+7d) | 2026-12-14 → 2026-12-21 (+7d) |  | 14d → 8d |  |
| 4 | **Kerbstone Installation** | 2026-10-28 → 2026-11-04 (+7d) | 2027-01-07 → 2027-01-14 (+7d) |  |  |  |
| SDR-2-CON-RW-ZA-3500 | Kerbstone Installation "all Types" Part 1 | 2026-10-28 → 2026-11-04 (+7d) | 2026-11-17 → 2026-11-24 (+7d) |  | 14d → 8d |  |
| SDR-2-CON-RW-ZA-2510 | Kerbstone Installation "all Types" Part 2 | 2026-12-15 → 2026-12-22 (+7d) | 2027-01-07 → 2027-01-14 (+7d) |  | 14d → 8d |  |
| 5 | **Interlock Installation** | 2027-01-09 → 2027-01-16 (+7d) | 2027-02-01 → 2027-02-08 (+7d) |  |  |  |
| SDR-2-CON-RW-ZA-2520 | Interlock Installation | 2027-01-09 → 2027-01-16 (+7d) | 2027-02-01 → 2027-02-08 (+7d) |  | 22d → 16d | SDR-2-CON-RW-ZA-3190, SDR-2-CON-RW-ZA-2510 → SDR-2-CON-RW-ZA-2040, SDR-2-CON-RW-ZA-2510 |
| 6 | **Road Marking** | 2027-02-02 → 2027-02-09 (+7d) | 2027-03-07 → 2027-03-18 (+11d) |  |  |  |
| SDR-2-CON-RW-ZA-2530 | Retroreflective Thermoplastic White Traffic lines | 2027-02-02 → 2027-02-09 (+7d) | 2027-02-17 → 2027-02-25 (+8d) |  | 22d → 16d |  |
| SDR-2-CON-RW-ZA-2540 | Retroreflective Thermoplastic Yellow, Traffic lines | 2027-02-18 → 2027-02-27 (+9d) | 2027-03-07 → 2027-03-18 (+11d) |  | 22d → 16d |  |
| 7 | **Traffic Signage** | 2027-03-08 → 2027-03-20 (+12d) | 2027-04-04 → 2027-04-11 (+7d) |  |  |  |
| SDR-2-CON-RW-ZA-2550 | Single post-Traffic signs Installation | 2027-03-08 → 2027-03-20 (+12d) | 2027-04-04 → 2027-04-11 (+7d) |  | 22d → 16d |  |
| 11 | **ROAD WORKS IN ( PH2-ART-MC00 )** |  | 2027-02-21 → 2027-03-01 (+8d) |  |  |  |
| 3 | **Asphalt Works** |  | 2026-10-31 → 2026-11-07 (+7d) |  |  |  |
| SDR-2-CON-RW-ZA-2640 | Asphalt works 2nd layer with RC-02 | 2026-10-19 → 2026-10-26 (+7d) | 2026-10-31 → 2026-11-07 (+7d) |  | 35d → 29d |  |
| 4 | **Kerbstone Installation** | 2026-10-19 → 2026-10-26 (+7d) | 2026-12-02 → 2026-12-09 (+7d) |  |  |  |
| SDR-2-CON-RW-ZA-3510 | Kerbstone Installation "all Types" Part 1 | 2026-10-19 → 2026-10-26 (+7d) | 2026-11-08 → 2026-11-15 (+7d) |  | 28d → 22d |  |
| SDR-2-CON-RW-ZA-2650 | Kerbstone Installation "all Types" Part 2 | 2026-11-09 → 2026-11-16 (+7d) | 2026-12-02 → 2026-12-09 (+7d) |  | 28d → 22d |  |
| 5 | **Interlock Installation** | 2026-12-03 → 2026-12-10 (+7d) | 2026-12-27 → 2027-01-03 (+7d) |  |  |  |
| SDR-2-CON-RW-ZA-2660 | Interlock Installation | 2026-12-03 → 2026-12-10 (+7d) | 2026-12-27 → 2027-01-03 (+7d) |  | 28d → 22d |  |
| 6 | **Road Marking** | 2026-12-28 → 2027-01-04 (+7d) | 2027-02-02 → 2027-02-09 (+7d) |  |  |  |
| SDR-2-CON-RW-ZA-2670 | Retroreflective Thermoplastic White Traffic lines | 2026-12-28 → 2027-01-04 (+7d) | 2027-01-16 → 2027-01-23 (+7d) |  | 28d → 22d |  |
| SDR-2-CON-RW-ZA-2680 | Retroreflective Thermoplastic Yellow, Traffic lines | 2027-01-17 → 2027-01-24 (+7d) | 2027-02-02 → 2027-02-09 (+7d) |  | 28d → 22d |  |
| 7 | **Traffic Signage** | 2027-02-03 → 2027-02-10 (+7d) | 2027-02-21 → 2027-03-01 (+8d) |  |  |  |
| SDR-2-CON-RW-ZA-2690 | Single post-Traffic signs Installation | 2027-02-03 → 2027-02-10 (+7d) | 2027-02-21 → 2027-03-01 (+8d) |  | 28d → 22d |  |
| 12 | **ROAD WORKS IN ( PH2-ART-MC10 )** |  | 2027-03-22 → 2027-03-16 (-6d) |  |  |  |
| 2 | **Base Course** |  | 2026-10-31 → 2026-10-26 (-5d) |  |  |  |
| SDR-2-CON-RW-ZA-2750 | Aggregate base course layer |  | 2026-10-31 → 2026-10-26 (-5d) | 50% → 90% | 54d → 59d |  |
| 8 | **Demolition Work** | 2026-11-01 → 2026-10-26 (-6d) | 2026-11-02 → 2026-10-27 (-6d) |  |  |  |
| SDR-2-CON-RW-ZA-2760 | Milling of wearing course | 2026-11-01 → 2026-10-26 (-6d) | 2026-11-02 → 2026-10-27 (-6d) |  | 54d → 59d |  |
| 3 | **Asphalt Works** | 2026-11-03 → 2026-10-24 (-10d) | 2026-12-24 → 2026-12-19 (-5d) |  |  |  |
| SDR-2-CON-RW-ZA-2770 | Asphalt works 1st Layer with MC-01 | 2026-11-03 → 2026-10-24 A (-10d) | 2026-11-14 → 2026-11-08 (-6d) | 0% → 35% | 54d → 59d |  |
| SDR-2-CON-RW-ZA-2780 | Asphalt works 2nd layer with RC-02 | 2026-11-15 → 2026-11-09 (-6d) | 2026-11-30 → 2026-11-24 (-6d) |  | 54d → 59d |  |
| SDR-2-CON-RW-ZA-2850 | Asphalt Works 3 rd Layer with RC-02 | 2026-12-01 → 2026-11-25 (-6d) | 2026-12-24 → 2026-12-19 (-5d) |  | 54d → 59d |  |
| 4 | **Kerbstone Installation** | 2026-10-19 → 2026-10-26 (+7d) | 2027-01-18 → 2027-01-12 (-6d) |  |  |  |
| SDR-2-CON-RW-ZA-3520 | Kerbstone Installation "all Types" Part 1 | 2026-10-19 → 2026-10-26 (+7d) | 2026-11-08 → 2026-11-15 (+7d) |  | 64d → 67d |  |
| SDR-2-CON-RW-ZA-2790 | Kerbstone Installation "all Types" Part 2 | 2026-12-26 → 2026-12-20 (-6d) | 2027-01-18 → 2027-01-12 (-6d) |  | 54d → 59d | SDR-2-CON-RW-ZA-3190 FS+2d, SDR-2-CON-RW-ZA-2850, SDR-2-CON-RW-ZA-2850 FF → SDR-2-CON-RW-ZA-2040 FS+2d, SDR-2-CON-RW-ZA-2850, SDR-2-CON-RW-ZA-2850 FF |
| 5 | **Interlock Installation** | 2027-01-19 → 2027-01-13 (-6d) | 2027-02-11 → 2027-02-06 (-5d) |  |  |  |
| SDR-2-CON-RW-ZA-2800 | Interlock Installation | 2027-01-19 → 2027-01-13 (-6d) | 2027-02-11 → 2027-02-06 (-5d) |  | 54d → 59d |  |
| 6 | **Road Marking** | 2027-02-13 → 2027-02-07 (-6d) | 2027-03-03 → 2027-02-25 (-6d) |  |  |  |
| SDR-2-CON-RW-ZA-2810 | Retroreflective Thermoplastic White Traffic lines | 2027-02-13 → 2027-02-07 (-6d) | 2027-02-21 → 2027-02-15 (-6d) |  | 54d → 59d |  |
| SDR-2-CON-RW-ZA-2820 | Retroreflective Thermoplastic Yellow, Traffic lines | 2027-02-23 → 2027-02-16 (-7d) | 2027-03-03 → 2027-02-25 (-6d) |  | 54d → 59d |  |
| 7 | **Traffic Signage** | 2027-03-04 → 2027-02-27 (-5d) | 2027-03-22 → 2027-03-16 (-6d) |  |  |  |
| SDR-2-CON-RW-ZA-2830 | Single post-Traffic signs Installation | 2027-03-04 → 2027-02-27 (-5d) | 2027-03-22 → 2027-03-16 (-6d) |  | 54d → 59d |  |
| ZG | **ZONE G** |  | 2027-04-17 → 2027-04-24 (+7d) |  |  |  |
| 5 | **ROAD WORKS IN ( PH2-COL-MC50 )** |  | 2027-04-17 → 2027-04-24 (+7d) |  |  |  |
| 8 | **Demolition Work** | 2026-10-19 → 2026-10-26 (+7d) | 2026-11-10 → 2026-11-17 (+7d) |  |  |  |
| SDR-2-CON-RW-ZG-1080 | Removal of curbstone | 2026-10-19 → 2026-10-26 (+7d) | 2026-10-31 → 2026-11-07 (+7d) |  | 0d → 4d |  |
| SDR-2-CON-RW-ZG-1090 | Milling of wearing course | 2026-11-01 → 2026-11-08 (+7d) | 2026-11-10 → 2026-11-17 (+7d) |  | 0d → 4d |  |
| 3 | **Asphalt Works** |  | 2026-12-27 → 2027-01-03 (+7d) |  |  |  |
| SDR-2-CON-RW-ZG-1100 | Asphalt works 1st Layer with MC-01 |  | 2026-12-02 → 2026-12-09 (+7d) |  | 0d → 4d |  |
| SDR-2-CON-RW-ZG-1110 | Asphalt works 2nd layer with RC-02 | 2026-12-03 → 2026-12-10 (+7d) | 2026-12-27 → 2027-01-03 (+7d) |  | 0d → 4d |  |
| 4 | **Kerbstone Installation** | 2026-10-19 → 2026-10-26 (+7d) | 2027-01-20 → 2027-01-27 (+7d) |  |  |  |
| SDR-2-CON-RW-ZG-2550 | Kerbstone Installation "all Types" Part 1 | 2026-10-19 → 2026-10-26 (+7d) | 2026-11-08 → 2026-11-15 (+7d) |  | 2d → 6d |  |
| SDR-2-CON-RW-ZG-1120 | Kerbstone Installation "all Types" Part 2 | 2026-12-28 → 2027-01-04 (+7d) | 2027-01-20 → 2027-01-27 (+7d) |  | 10d → 4d |  |
| 5 | **Interlock Installation** | 2027-01-21 → 2027-01-28 (+7d) | 2027-02-14 → 2027-02-21 (+7d) |  |  |  |
| SDR-2-CON-RW-ZG-1130 | Interlock Installation | 2027-01-21 → 2027-01-28 (+7d) | 2027-02-14 → 2027-02-21 (+7d) |  | 10d → 4d |  |
| 6 | **Road Marking** | 2027-02-15 → 2027-02-23 (+8d) | 2027-03-24 → 2027-03-31 (+7d) |  |  |  |
| SDR-2-CON-RW-ZG-1140 | Retroreflective Thermoplastic White Traffic lines | 2027-02-15 → 2027-02-23 (+8d) | 2027-03-03 → 2027-03-15 (+12d) |  | 10d → 4d |  |
| SDR-2-CON-RW-ZG-1150 | Retroreflective Thermoplastic Yellow, Traffic lines | 2027-03-04 → 2027-03-16 (+12d) | 2027-03-24 → 2027-03-31 (+7d) |  | 10d → 4d |  |
| 7 | **Traffic Signage** | 2027-03-25 → 2027-04-01 (+7d) | 2027-04-17 → 2027-04-24 (+7d) |  |  |  |

| ID | Task | Start | Finish | Complete | Total float |
| --- | --- | --- | --- | --- | --- |
| SDR-2-CON-RW-ZG-1160 | Single post-Traffic signs Installation | 2027-03-25 → 2027-04-01 (+7d) | 2027-04-17 → 2027-04-24 (+7d) |  | 10d → 4d |
| 1 | **ROAD WORKS IN ( PH2-G-MCA0 )** |  | 2027-03-07 → 2027-03-18 (+11d) |  |  |
| 8 | **Demolition Work** | 2026-10-19 → 2026-10-26 (+7d) | 2026-11-05 → 2026-11-12 (+7d) |  |  |
| SDR-2-CON-RW-ZG-1380 | Removal of curbstone | 2026-10-19 → 2026-10-26 (+7d) | 2026-10-28 → 2026-11-04 (+7d) |  | 36d → 30d |
| SDR-2-CON-RW-ZG-1390 | Milling of wearing course | 2026-10-29 → 2026-11-05 (+7d) | 2026-11-05 → 2026-11-12 (+7d) |  | 36d → 30d |
| 3 | **Asphalt Works** |  | 2026-11-22 → 2026-11-29 (+7d) |  |  |
| SDR-2-CON-RW-ZG-1400 | Asphalt works 1st Layer with MC-01 |  | 2026-11-01 → 2026-11-08 (+7d) |  | 49d → 43d |
| SDR-2-CON-RW-ZG-1410 | Asphalt works 2nd layer with RC-02 | 2026-11-02 → 2026-11-09 (+7d) | 2026-11-22 → 2026-11-29 (+7d) |  | 49d → 43d |
| 4 | **Kerbstone Installation** | 2026-11-09 → 2026-11-16 (+7d) | 2026-12-16 → 2026-12-23 (+7d) |  |  |
| SDR-2-CON-RW-ZG-2570 | Kerbstone Installation "all Types" Part 1 | 2026-11-09 → 2026-11-16 (+7d) | 2026-11-29 → 2026-12-06 (+7d) |  | 22d → 16d |
| SDR-2-CON-RW-ZG-1420 | Kerbstone Installation "all Types" Part 2 | 2026-11-23 → 2026-11-30 (+7d) | 2026-12-16 → 2026-12-23 (+7d) |  | 49d → 43d |
| 5 | **Interlock Installation** | 2026-12-17 → 2026-12-24 (+7d) | 2027-01-09 → 2027-01-16 (+7d) |  |  |
| SDR-2-CON-RW-ZG-1430 | Interlock Installation | 2026-12-17 → 2026-12-24 (+7d) | 2027-01-09 → 2027-01-16 (+7d) |  | 49d → 43d |
| 6 | **Road Marking** | 2027-01-10 → 2027-01-17 (+7d) | 2027-02-10 → 2027-02-17 (+7d) |  |  |
| SDR-2-CON-RW-ZG-1440 | Retroreflective Thermoplastic White Traffic lines | 2027-01-10 → 2027-01-17 (+7d) | 2027-01-25 → 2027-02-01 (+7d) |  | 49d → 43d |
| SDR-2-CON-RW-ZG-1450 | Retroreflective Thermoplastic Yellow, Traffic lines | 2027-01-26 → 2027-02-02 (+7d) | 2027-02-10 → 2027-02-17 (+7d) |  | 49d → 43d |
| 7 | **Traffic Signage** | 2027-02-11 → 2027-02-18 (+7d) | 2027-03-07 → 2027-03-18 (+11d) |  |  |
| SDR-2-CON-RW-ZG-1460 | Single post-Traffic signs Installation | 2027-02-11 → 2027-02-18 (+7d) | 2027-03-07 → 2027-03-18 (+11d) |  | 49d → 43d |
| 6 | **ROAD WORKS IN ( PH2-ART-MC00 )** |  | 2027-03-22 → 2027-03-29 (+7d) |  |  |
| 3 | **Asphalt Works** |  | 2026-12-02 → 2026-12-09 (+7d) |  |  |
| SDR-2-CON-RW-ZG-1260 | Asphalt works 2nd layer with RC-02 | 2026-11-09 → 2026-11-16 (+7d) | 2026-12-02 → 2026-12-09 (+7d) |  | 54d → 48d |
| 4 | **Kerbstone Installation** | 2026-10-19 → 2026-10-26 (+7d) | 2026-12-26 → 2027-01-02 (+7d) |  |  |
| SDR-2-CON-RW-ZG-2560 | Kerbstone Installation "all Types" Part 1 | 2026-10-19 → 2026-10-26 (+7d) | 2026-11-08 → 2026-11-15 (+7d) |  | 22d → 16d |
| SDR-2-CON-RW-ZG-1270 | Kerbstone Installation "all Types" Part 2 | 2026-12-03 → 2026-12-10 (+7d) | 2026-12-26 → 2027-01-02 (+7d) |  | 54d → 48d |
| 5 | **Interlock Installation** | 2026-12-27 → 2027-01-03 (+7d) | 2027-01-19 → 2027-01-26 (+7d) |  |  |
| SDR-2-CON-RW-ZG-1280 | Interlock Installation | 2026-12-27 → 2027-01-03 (+7d) | 2027-01-19 → 2027-01-26 (+7d) |  | 54d → 48d |
| 6 | **Road Marking** | 2027-01-20 → 2027-01-27 (+7d) | 2027-02-21 → 2027-03-01 (+8d) |  |  |
| SDR-2-CON-RW-ZG-1290 | Retroreflective Thermoplastic White Traffic lines | 2027-01-20 → 2027-01-27 (+7d) | 2027-02-04 → 2027-02-11 (+7d) |  | 54d → 48d |
| SDR-2-CON-RW-ZG-1300 | Retroreflective Thermoplastic Yellow, Traffic lines | 2027-02-06 → 2027-02-13 (+7d) | 2027-02-21 → 2027-03-01 (+8d) |  | 54d → 48d |
| 7 | **Traffic Signage** | 2027-02-23 → 2027-03-02 (+7d) | 2027-03-22 → 2027-03-29 (+7d) |  |  |
| SDR-2-CON-RW-ZG-1310 | Single post-Traffic signs Installation | 2027-02-23 → 2027-03-02 (+7d) | 2027-03-22 → 2027-03-29 (+7d) |  | 54d → 48d |
| 8 | **ROAD WORKS IN ( PH2-G-MCE0 )** |  | 2027-04-12 → 2027-04-19 (+7d) |  |  |
| 8 | **Demolition Work** | 2026-10-19 → 2026-10-26 (+7d) | 2026-12-05 → 2026-12-12 (+7d) |  |  |
| SDR-2-CON-RW-ZG-1530 | Removal of curbstone | 2026-10-19 → 2026-10-26 (+7d) | 2026-10-22 → 2026-10-29 (+7d) |  | 54d → 48d |
| SDR-2-CON-RW-ZG-1540 | Milling of wearing course | 2026-11-30 → 2026-12-07 (+7d) | 2026-12-05 → 2026-12-12 (+7d) |  | 22d → 16d |
| 3 | **Asphalt Works** |  | 2026-12-22 → 2026-12-29 (+7d) |  |  |
| SDR-2-CON-RW-ZG-1560 | Asphalt works 2nd layer with RC-02 | 2026-12-06 → 2026-12-13 (+7d) | 2026-12-22 → 2026-12-29 (+7d) |  | 22d → 16d |
| 4 | **Kerbstone Installation** | 2026-10-19 → 2026-10-26 (+7d) | 2027-01-16 → 2027-01-23 (+7d) |  |  |
| SDR-2-CON-RW-ZG-2580 | Kerbstone Installation "all Types" Part 1 | 2026-10-19 → 2026-10-26 (+7d) | 2026-11-08 → 2026-11-15 (+7d) |  | 50d → 44d |
| SDR-2-CON-RW-ZG-1570 | Kerbstone Installation "all Types" Part 2 | 2026-12-23 → 2026-12-30 (+7d) | 2027-01-16 → 2027-01-23 (+7d) |  | 22d → 16d |
| 5 | **Interlock Installation** | 2027-01-17 → 2027-01-24 (+7d) | 2027-02-09 → 2027-02-16 (+7d) |  |  |
| SDR-2-CON-RW-ZG-1580 | Interlock Installation | 2027-01-17 → 2027-01-24 (+7d) | 2027-02-09 → 2027-02-16 (+7d) |  | 22d → 16d |
| 6 | **Road Marking** | 2027-02-10 → 2027-02-17 (+7d) | 2027-03-20 → 2027-03-27 (+7d) |  |  |
| SDR-2-CON-RW-ZG-1590 | Retroreflective Thermoplastic White Traffic lines | 2027-02-10 → 2027-02-17 (+7d) | 2027-02-27 → 2027-03-06 (+7d) |  | 22d → 16d |
| SDR-2-CON-RW-ZG-1600 | Retroreflective Thermoplastic Yellow, Traffic lines | 2027-02-28 → 2027-03-07 (+7d) | 2027-03-20 → 2027-03-27 (+7d) |  | 22d → 16d |
| 7 | **Traffic Signage** | 2027-03-21 → 2027-03-28 (+7d) | 2027-04-12 → 2027-04-19 (+7d) |  |  |
| SDR-2-CON-RW-ZG-1610 | Single post-Traffic signs Installation | 2027-03-21 → 2027-03-28 (+7d) | 2027-04-12 → 2027-04-19 (+7d) |  | 22d → 16d |
| 4 | **ROAD WORKS IN ( PH2-G-MCD0 )** |  | 2027-04-01 → 2027-04-08 (+7d) |  |  |
| 9 | **Earth Works Plot** |  | 2026-11-08 → 2026-11-15 (+7d) |  |  |
| SDR-2-CON-RW-ZG-1650 | Plot Excavation for cuttings (all types of soil) |  | 2026-10-19 → 2026-10-26 (+7d) |  | 67d → 61d |
| SDR-2-CON-RW-ZG-1660 | Embankments to the Plot 2 Layer |  | 2026-11-08 → 2026-11-15 (+7d) | 50% → 80% | 66d → 60d |
| 8 | **Demolition Work** | 2026-10-19 → 2026-10-26 (+7d) | 2026-10-28 → 2026-11-04 (+7d) |  |  |
| SDR-2-CON-RW-ZG-1680 | Removal of curbstone | 2026-10-19 → 2026-10-26 (+7d) | 2026-10-22 → 2026-10-29 (+7d) |  | 45d → 39d |
| SDR-2-CON-RW-ZG-1690 | Milling of wearing course | 2026-10-24 → 2026-10-31 (+7d) | 2026-10-28 → 2026-11-04 (+7d) |  | 45d → 39d |
| 3 | **Asphalt Works** |  | 2026-12-13 → 2026-12-20 (+7d) |  |  |
| SDR-2-CON-RW-ZG-1700 | Asphalt works 1st Layer with MC-01 |  | 2026-11-18 → 2026-11-25 (+7d) |  | 45d → 39d |
| SDR-2-CON-RW-ZG-1710 | Asphalt works 2nd layer with RC-02 | 2026-11-19 → 2026-11-26 (+7d) | 2026-12-13 → 2026-12-20 (+7d) |  | 45d → 39d |
| 4 | **Kerbstone Installation** | 2026-10-19 → 2026-10-26 (+7d) | 2027-01-06 → 2027-01-13 (+7d) |  |  |
| SDR-2-CON-RW-ZG-2590 | Kerbstone Installation "all Types" Part 1 | 2026-10-19 → 2026-10-26 (+7d) | 2026-11-08 → 2026-11-15 (+7d) |  | 22d → 16d |
| SDR-2-CON-RW-ZG-1720 | Kerbstone Installation "all Types" Part 2 | 2026-12-14 → 2026-12-21 (+7d) | 2027-01-06 → 2027-01-13 (+7d) |  | 45d → 39d |
| 5 | **Interlock Installation** | 2027-01-07 → 2027-01-14 (+7d) | 2027-01-30 → 2027-02-06 (+7d) |  |  |
| SDR-2-CON-RW-ZG-1730 | Interlock Installation | 2027-01-07 → 2027-01-14 (+7d) | 2027-01-30 → 2027-02-06 (+7d) |  | 45d → 39d |
| 6 | **Road Marking** | 2027-01-31 → 2027-02-07 (+7d) | 2027-03-04 → 2027-03-16 (+12d) |  |  |
| SDR-2-CON-RW-ZG-1740 | Retroreflective Thermoplastic White Traffic lines | 2027-01-31 → 2027-02-07 (+7d) | 2027-02-15 → 2027-02-23 (+8d) |  | 45d → 39d |
| SDR-2-CON-RW-ZG-1750 | Retroreflective Thermoplastic Yellow, Traffic lines | 2027-02-16 → 2027-02-24 (+8d) | 2027-03-04 → 2027-03-16 (+12d) |  | 45d → 39d |
| 7 | **Traffic Signage** | 2027-03-06 → 2027-03-17 (+11d) | 2027-04-01 → 2027-04-08 (+7d) |  |  |
| SDR-2-CON-RW-ZG-1760 | Single post-Traffic signs Installation | 2027-03-06 → 2027-03-17 (+11d) | 2027-04-01 → 2027-04-08 (+7d) |  | 45d → 39d |
| 2 | **ROAD WORKS IN ( PH2-G-MCF0 )** |  | 2027-03-31 → 2027-04-07 (+7d) |  |  |
| 8 | **Demolition Work** | 2026-10-19 → 2026-10-26 (+7d) | 2026-11-16 → 2026-11-23 (+7d) |  |  |
| SDR-2-CON-RW-ZG-1830 | Removal of curbstone | 2026-10-19 → 2026-10-26 (+7d) | 2026-10-26 → 2026-11-02 (+7d) |  | 33d → 27d |

| ID | Task | Start | Finish | Complete | Total float |
| --- | --- | --- | --- | --- | --- |
| SDR-2-CON-RW-ZG-1840 | Milling of wearing course | 2026-11-09 → 2026-11-16 (+7d) | 2026-11-16 → 2026-11-23 (+7d) |  | 22d → 16d |
| 3 | **Asphalt Works** |  | 2026-12-10 → 2026-12-17 (+7d) |  |  |
| SDR-2-CON-RW-ZG-1860 | Asphalt works 2nd layer with RC-02 | 2026-11-17 → 2026-11-24 (+7d) | 2026-12-10 → 2026-12-17 (+7d) |  | 22d → 16d |
| 4 | **Kerbstone Installation** | 2026-10-19 → 2026-10-26 (+7d) | 2027-01-04 → 2027-01-11 (+7d) |  |  |
| SDR-2-CON-RW-ZG-2600 | Kerbstone Installation "all Types" Part 1 | 2026-10-19 → 2026-10-26 (+7d) | 2026-11-08 → 2026-11-15 (+7d) |  | 20d → 14d |
| SDR-2-CON-RW-ZG-1870 | Kerbstone Installation "all Types" Part 2 | 2026-12-12 → 2026-12-19 (+7d) | 2027-01-04 → 2027-01-11 (+7d) |  | 22d → 16d |
| 5 | **Interlock Installation** | 2027-01-05 → 2027-01-12 (+7d) | 2027-01-28 → 2027-02-04 (+7d) |  |  |
| SDR-2-CON-RW-ZG-1880 | Interlock Installation | 2027-01-05 → 2027-01-12 (+7d) | 2027-01-28 → 2027-02-04 (+7d) |  | 22d → 16d |
| 6 | **Road Marking** | 2027-01-30 → 2027-02-06 (+7d) | 2027-03-03 → 2027-03-15 (+12d) |  |  |
| SDR-2-CON-RW-ZG-1890 | Retroreflective Thermoplastic White Traffic lines | 2027-01-30 → 2027-02-06 (+7d) | 2027-02-14 → 2027-02-21 (+7d) |  | 22d → 16d |
| SDR-2-CON-RW-ZG-1900 | Retroreflective Thermoplastic Yellow, Traffic lines | 2027-02-15 → 2027-02-23 (+8d) | 2027-03-03 → 2027-03-15 (+12d) |  | 22d → 16d |
| 7 | **Traffic Signage** | 2027-03-04 → 2027-03-16 (+12d) | 2027-03-31 → 2027-04-07 (+7d) |  |  |
| SDR-2-CON-RW-ZG-1910 | Single post-Traffic signs Installation | 2027-03-04 → 2027-03-16 (+12d) | 2027-03-31 → 2027-04-07 (+7d) |  | 22d → 16d |
| 3 | **ROAD WORKS IN ( PH2-G-MCG0 )** |  | 2027-04-03 → 2027-04-10 (+7d) |  |  |
| 9 | **Earth Works Plot** |  | 2026-10-20 → 2026-10-27 (+7d) |  |  |
| SDR-2-CON-RW-ZG-1950 | Plot Excavation for cuttings (all types of soil) |  | 2026-10-19 → 2026-10-26 (+7d) | 45% → 55% | 36d → 30d |
| SDR-2-CON-RW-ZG-2500 | Embankments to the Plot 1 Layer |  | 2026-10-19 → 2026-10-26 (+7d) |  | 49d → 43d |
| SDR-2-CON-RW-ZG-1960 | Embankments to the Plot 2 Layer |  | 2026-10-20 → 2026-10-27 (+7d) | 45% → 55% | 88d → 82d |
| 8 | **Demolition Work** | 2026-10-19 → 2026-10-26 (+7d) | 2026-11-24 → 2026-12-01 (+7d) |  |  |
| SDR-2-CON-RW-ZG-1980 | Removal of curbstone | 2026-10-19 → 2026-10-26 (+7d) | 2026-10-27 → 2026-11-03 (+7d) |  | 36d → 30d |
| SDR-2-CON-RW-ZG-1990 | Milling of wearing course | 2026-11-16 → 2026-11-23 (+7d) | 2026-11-24 → 2026-12-01 (+7d) |  | 20d → 14d |
| 3 | **Asphalt Works** |  | 2026-12-13 → 2026-12-20 (+7d) |  |  |
| SDR-2-CON-RW-ZG-2010 | Asphalt works 2nd layer with RC-02 | 2026-11-25 → 2026-12-02 (+7d) | 2026-12-13 → 2026-12-20 (+7d) |  | 20d → 14d |
| 4 | **Kerbstone Installation** | 2026-10-19 → 2026-10-26 (+7d) | 2027-01-06 → 2027-01-13 (+7d) |  |  |
| SDR-2-CON-RW-ZG-2610 | Kerbstone Installation "all Types" Part 1 | 2026-10-19 → 2026-10-26 (+7d) | 2026-11-08 → 2026-11-15 (+7d) |  | 26d → 20d |
| SDR-2-CON-RW-ZG-2020 | Kerbstone Installation "all Types" Part 2 | 2026-12-14 → 2026-12-21 (+7d) | 2027-01-06 → 2027-01-13 (+7d) |  | 20d → 14d |
| 5 | **Interlock Installation** | 2027-01-07 → 2027-01-14 (+7d) | 2027-01-31 → 2027-02-07 (+7d) |  |  |
| SDR-2-CON-RW-ZG-2030 | Interlock Installation | 2027-01-07 → 2027-01-14 (+7d) | 2027-01-31 → 2027-02-07 (+7d) |  | 20d → 14d |
| 6 | **Road Marking** | 2027-02-01 → 2027-02-08 (+7d) | 2027-03-06 → 2027-03-17 (+11d) |  |  |
| SDR-2-CON-RW-ZG-2040 | Retroreflective Thermoplastic White Traffic lines | 2027-02-01 → 2027-02-08 (+7d) | 2027-02-16 → 2027-02-24 (+8d) |  | 20d → 14d |
| SDR-2-CON-RW-ZG-2050 | Retroreflective Thermoplastic Yellow, Traffic lines | 2027-02-17 → 2027-02-25 (+8d) | 2027-03-06 → 2027-03-17 (+11d) |  | 20d → 14d |
| 7 | **Traffic Signage** | 2027-03-07 → 2027-03-18 (+11d) | 2027-04-03 → 2027-04-10 (+7d) |  |  |
| SDR-2-CON-RW-ZG-2060 | Single post-Traffic signs Installation | 2027-03-07 → 2027-03-18 (+11d) | 2027-04-03 → 2027-04-10 (+7d) |  | 20d → 14d |
| 7 | **ROAD WORKS IN ( PH2-G-MCZ0 )** |  | 2027-03-06 → 2027-03-17 (+11d) |  |  |
| 8 | **Demolition Work** | 2026-10-19 → 2026-10-26 (+7d) | 2026-11-04 → 2026-11-11 (+7d) |  |  |
| SDR-2-CON-RW-ZG-2130 | Removal of curbstone | 2026-10-19 → 2026-10-26 (+7d) | 2026-10-24 → 2026-10-31 (+7d) |  | 40d → 34d |
| SDR-2-CON-RW-ZG-2140 | Milling of wearing course | 2026-10-25 → 2026-11-01 (+7d) | 2026-11-04 → 2026-11-11 (+7d) |  | 40d → 34d |
| 3 | **Asphalt Works** |  | 2026-11-19 → 2026-11-26 (+7d) |  |  |
| SDR-2-CON-RW-ZG-2160 | Asphalt works 2nd layer with RC-02 | 2026-11-05 → 2026-11-12 (+7d) | 2026-11-19 → 2026-11-26 (+7d) |  | 40d → 34d |
| 4 | **Kerbstone Installation** | 2026-10-19 → 2026-10-26 (+7d) | 2026-12-14 → 2026-12-21 (+7d) |  |  |
| SDR-2-CON-RW-ZG-2620 | Kerbstone Installation "all Types" Part 1 | 2026-10-19 → 2026-10-26 (+7d) | 2026-11-08 → 2026-11-15 (+7d) |  | 50d → 44d |
| SDR-2-CON-RW-ZG-2170 | Kerbstone Installation "all Types" Part 2 | 2026-11-21 → 2026-11-28 (+7d) | 2026-12-14 → 2026-12-21 (+7d) |  | 40d → 34d |
| 5 | **Interlock Installation** | 2026-12-15 → 2026-12-22 (+7d) | 2027-01-07 → 2027-01-14 (+7d) |  |  |
| SDR-2-CON-RW-ZG-2180 | Interlock Installation | 2026-12-15 → 2026-12-22 (+7d) | 2027-01-07 → 2027-01-14 (+7d) |  | 40d → 34d |
| 6 | **Road Marking** | 2027-01-09 → 2027-01-16 (+7d) | 2027-02-09 → 2027-02-16 (+7d) |  |  |
| SDR-2-CON-RW-ZG-2190 | Retroreflective Thermoplastic White Traffic lines | 2027-01-09 → 2027-01-16 (+7d) | 2027-01-24 → 2027-01-31 (+7d) |  | 40d → 34d |
| SDR-2-CON-RW-ZG-2200 | Retroreflective Thermoplastic Yellow, Traffic lines | 2027-01-25 → 2027-02-01 (+7d) | 2027-02-09 → 2027-02-16 (+7d) |  | 40d → 34d |
| 7 | **Traffic Signage** | 2027-02-10 → 2027-02-17 (+7d) | 2027-03-06 → 2027-03-17 (+11d) |  |  |
| SDR-2-CON-RW-ZG-2210 | Single post-Traffic signs Installation | 2027-02-10 → 2027-02-17 (+7d) | 2027-03-06 → 2027-03-17 (+11d) |  | 40d → 34d |
| ST | **Storm Water Drainage Network** |  | 2027-05-27 → 2027-05-30 (+3d) |  |  |
| ZA | **ZONE A** |  | 2027-05-27 → 2027-05-30 (+3d) |  |  |
| 11 | **STORM WATER LINE IN ( PH2-A-MCB0 )** |  | 2027-02-21 → 2027-03-01 (+8d) |  |  |
| 8 | **Pipes Works** |  | 2027-02-01 → 2027-02-08 (+7d) |  |  |
| 2 | **Pipes Laying** |  | 2027-01-05 → 2027-01-12 (+7d) |  |  |
| SDR-2-CON-ST-ZA-1090 | Install ST GRP Pipes |  | 2027-01-05 → 2027-01-12 (+7d) | 62% → 65% | 15.1d → 9.1d |
| 6 | **Testing** | 2027-01-05 → 2027-01-12 (+7d) | 2027-01-30 → 2027-02-06 (+7d) |  |  |
| SDR-2-CON-ST-ZA-3440 | Testing ST GRP Pipes | 2027-01-05 → 2027-01-12 (+7d) | 2027-01-30 → 2027-02-06 (+7d) |  | 15.1d → 9.1d |
| 3 | **Backfilling** | 2027-01-07 → 2027-01-14 (+7d) | 2027-02-01 → 2027-02-08 (+7d) |  |  |
| SDR-2-CON-ST-ZA-1140 | Backfilling ST GRP Pipes | 2027-01-07 → 2027-01-14 (+7d) | 2027-02-01 → 2027-02-08 (+7d) |  | 15.1d → 9.1d |
| 4 | **Manholes** |  | 2027-02-09 → 2027-02-16 (+7d) |  |  |
| 1 | **Excavation** |  | 2026-12-07 → 2026-12-14 (+7d) |  |  |
| SDR-2-CON-ST-ZA-1210 | Excavation Manholes Section 3 |  | 2026-12-07 → 2026-12-14 (+7d) |  | 16d → 10d |
| 2 | **bedding Works** |  | 2026-12-16 → 2026-12-23 (+7d) |  |  |
| SDR-2-CON-ST-ZA-3520 | Sand bedding for Manholes |  | 2026-12-16 → 2026-12-23 (+7d) |  | 8d → 2d |
| 3 | **Install Manholes** |  | 2026-12-16 → 2026-12-23 (+7d) |  |  |
| SDR-2-CON-ST-ZA-3600 | Manholes Installation |  | 2026-12-16 → 2026-12-23 (+7d) |  | 8d → 2d |
| 4 | **Testing** | 2026-12-23 → 2026-12-30 (+7d) | 2027-01-16 → 2027-01-23 (+7d) |  |  |
| SDR-2-CON-ST-ZA-3680 | Testing for Manholes | 2026-12-23 → 2026-12-30 (+7d) | 2027-01-16 → 2027-01-23 (+7d) |  | 8d → 2d |
| 5 | **Backfilling** | 2027-01-17 → 2027-01-24 (+7d) | 2027-02-09 → 2027-02-16 (+7d) |  |  |
| SDR-2-CON-ST-ZA-3760 | Backfilling for Manholes | 2027-01-17 → 2027-01-24 (+7d) | 2027-02-09 → 2027-02-16 (+7d) |  | 8d → 2d |

| ID | Task | Start | Finish | Complete | Total float |
| --- | --- | --- | --- | --- | --- |
| 5 | **Catch basin** |  | 2027-02-21 → 2027-03-01 (+8d) |  |  |
| 1 | **Excavation** |  | 2026-11-12 → 2026-11-19 (+7d) |  |  |
| SDR-2-CON-ST-ZA-6930 | Excavation for Catch basin Section 1 |  | 2026-10-19 → 2026-10-26 (+7d) | 40% → 60% | 99d → 93d |
| SDR-2-CON-ST-ZA-1300 | Excavation for Catch basin Section 2 | 2026-10-20 → 2026-10-19 A (-1d) | 2026-11-12 → 2026-11-19 (+7d) | 0% → 10% | 99d → 93d |
| 2 | **bedding Works** | 2026-11-14 → 2026-10-20 (-25d) | 2026-12-07 → 2026-12-14 (+7d) |  |  |
| SDR-2-CON-ST-ZA-3840 | Sand Dedding for Catch basin | 2026-11-14 → 2026-10-20 A (-25d) | 2026-12-07 → 2026-12-14 (+7d) | 0% → 10% | 99d → 93d |
| 3 | **Install Catch basin** | 2026-12-08 → 2026-10-22 (-47d) | 2026-12-31 → 2027-01-07 (+7d) |  |  |
| SDR-2-CON-ST-ZA-3900 | Install Catch basin | 2026-12-08 → 2026-10-22 A (-47d) | 2026-12-31 → 2027-01-07 (+7d) | 0% → 10% | 99d → 93d |
| 4 | **Testing** | 2026-12-23 → 2026-12-30 (+7d) | 2027-01-16 → 2027-01-23 (+7d) |  |  |
| SDR-2-CON-ST-ZA-3960 | Testing for Catch basin pipe | 2026-12-23 → 2026-12-30 (+7d) | 2027-01-16 → 2027-01-23 (+7d) |  | 86d → 80d |
| 5 | **Backfilling** | 2026-12-23 → 2026-12-30 (+7d) | 2027-02-21 → 2027-03-01 (+8d) |  |  |
| SDR-2-CON-ST-ZA-6940 | Backfilling for Catch basin Section 1 | 2026-12-23 → 2026-12-30 (+7d) | 2027-01-04 → 2027-01-11 (+7d) |  | 93d → 87d |
| SDR-2-CON-ST-ZA-4020 | Backfilling for Catch basin Section 2 | 2027-02-10 → 2027-02-17 (+7d) | 2027-02-21 → 2027-03-01 (+8d) |  | 60d → 54d |
| 12 | **STORM WATER LINE IN ( PH2-A-MCD0 )** |  | 2027-04-14 → 2027-04-21 (+7d) |  |  |
| 8 | **Pipes Works** |  | 2026-12-07 → 2026-12-14 (+7d) |  |  |
| 7 | **bedding Works** |  | 2026-10-19 → 2026-10-26 (+7d) |  |  |
| SDR-2-CON-ST-ZA-4090 | Sand bedding for GRP Pipes |  | 2026-10-19 → 2026-10-26 (+7d) |  | 61d → 55d |
| 2 | **Pipes Laying** |  | 2026-10-19 → 2026-10-26 (+7d) |  |  |
| SDR-2-CON-ST-ZA-4040 | Install ST GRP Pipes |  | 2026-10-19 → 2026-10-26 (+7d) |  | 61d → 55d |
| 6 | **Testing** | 2026-10-20 → 2026-10-27 (+7d) | 2026-11-12 → 2026-11-19 (+7d) |  |  |
| SDR-2-CON-ST-ZA-4080 | Testing ST GRP Pipes | 2026-10-20 → 2026-10-27 (+7d) | 2026-11-12 → 2026-11-19 (+7d) |  | 61d → 55d |
| 3 | **Backfilling** | 2026-11-14 → 2026-11-21 (+7d) | 2026-12-07 → 2026-12-14 (+7d) |  |  |
| SDR-2-CON-ST-ZA-4050 | Backfilling ST GRP Pipes | 2026-11-14 → 2026-11-21 (+7d) | 2026-12-07 → 2026-12-14 (+7d) |  | 61d → 55d |
| 4 | **Manholes** |  | 2026-12-08 → 2026-12-15 (+7d) |  |  |
| 2 | **bedding Works** |  | 2026-10-19 → 2026-10-26 (+7d) |  |  |
| SDR-2-CON-ST-ZA-4100 | Sand bedding for Manholes |  | 2026-10-19 → 2026-10-26 (+7d) |  | 97.91d → 104.91d |
| 3 | **Install Manholes** |  | 2026-10-20 → 2026-10-27 (+7d) |  |  |
| SDR-2-CON-ST-ZA-4110 | Manholes Installation |  | 2026-10-20 → 2026-10-27 (+7d) |  | 96d → 103d |
| 4 | **Testing** | 2026-10-21 → 2026-10-28 (+7d) | 2026-11-14 → 2026-11-21 (+7d) |  |  |
| SDR-2-CON-ST-ZA-4120 | Testing for Manholes | 2026-10-21 → 2026-10-28 (+7d) | 2026-11-14 → 2026-11-21 (+7d) |  | 96d → 104d |
| 5 | **Backfilling** | 2026-11-15 → 2026-11-22 (+7d) | 2026-12-08 → 2026-12-15 (+7d) |  |  |
| SDR-2-CON-ST-ZA-4130 | Backfilling for Manholes | 2026-11-15 → 2026-11-22 (+7d) | 2026-12-08 → 2026-12-15 (+7d) |  | 96d → 104d |
| 5 | **Catch basin** |  | 2027-04-14 → 2027-04-21 (+7d) |  |  |
| 1 | **Excavation** |  | 2026-12-06 → 2026-12-13 (+7d) |  |  |
| SDR-2-CON-ST-ZA-6970 | Excavation for Catch basin Section 1 |  | 2026-10-20 → 2026-10-27 (+7d) |  | 109d → 103d |
| SDR-2-CON-ST-ZA-6410 | Excavation for Catch basin Section 2 | 2026-10-21 → 2026-10-28 (+7d) | 2026-11-14 → 2026-11-21 (+7d) |  | 109d → 103d |
| SDR-2-CON-ST-ZA-4070 | Excavation for Catch basin Section 3 | 2026-11-15 → 2026-11-22 (+7d) | 2026-12-06 → 2026-12-13 (+7d) |  | 109d → 103d |
| 2 | **bedding Works** | 2027-01-05 → 2027-01-12 (+7d) | 2027-01-28 → 2027-02-04 (+7d) |  |  |
| SDR-2-CON-ST-ZA-4140 | Sand Dedding for Catch basin | 2027-01-05 → 2027-01-12 (+7d) | 2027-01-28 → 2027-02-04 (+7d) |  | 84d → 78d |
| 3 | **Install Catch basin** | 2027-01-30 → 2027-02-06 (+7d) | 2027-02-23 → 2027-03-02 (+7d) |  |  |
| SDR-2-CON-ST-ZA-4150 | Install Catch basin | 2027-01-30 → 2027-02-06 (+7d) | 2027-02-23 → 2027-03-02 (+7d) |  | 84d → 78d |
| 4 | **Testing** | 2027-03-23 → 2027-03-30 (+7d) | 2027-04-03 → 2027-04-10 (+7d) |  |  |
| SDR-2-CON-ST-ZA-4160 | Testing for Catch basin pipe | 2027-03-23 → 2027-03-30 (+7d) | 2027-04-03 → 2027-04-10 (+7d) |  | 65d → 59d |
| 5 | **Backfilling** | 2027-04-04 → 2027-04-11 (+7d) | 2027-04-14 → 2027-04-21 (+7d) |  |  |
| SDR-2-CON-ST-ZA-4170 | Backfilling for Catch basin | 2027-04-04 → 2027-04-11 (+7d) | 2027-04-14 → 2027-04-21 (+7d) |  | 65d → 59d |
| 13 | **STORM WATER LINE IN ( PH2-A-MCE0 )** |  | 2027-03-29 → 2027-04-05 (+7d) |  |  |
| 8 | **Pipes Works** |  | 2026-12-07 → 2026-12-14 (+7d) |  |  |
| 7 | **bedding Works** |  | 2026-10-19 → 2026-10-26 (+7d) |  |  |
| SDR-2-CON-ST-ZA-4240 | Sand bedding for GRP Pipes |  | 2026-10-19 → 2026-10-26 (+7d) |  | 59d → 63d |
| 2 | **Pipes Laying** |  | 2026-10-19 → 2026-10-26 (+7d) |  |  |
| SDR-2-CON-ST-ZA-4190 | Install ST GRP Pipes |  | 2026-10-19 → 2026-10-26 (+7d) |  | 59d → 63d |
| 6 | **Testing** | 2026-10-20 → 2026-10-27 (+7d) | 2026-11-12 → 2026-11-19 (+7d) |  |  |
| SDR-2-CON-ST-ZA-4230 | Testing ST GRP Pipes | 2026-10-20 → 2026-10-27 (+7d) | 2026-11-12 → 2026-11-19 (+7d) |  | 59d → 63d |
| 3 | **Backfilling** | 2026-11-14 → 2026-11-21 (+7d) | 2026-12-07 → 2026-12-14 (+7d) |  |  |
| SDR-2-CON-ST-ZA-4200 | Backfilling ST GRP Pipes | 2026-11-14 → 2026-11-21 (+7d) | 2026-12-07 → 2026-12-14 (+7d) |  | 59d → 63d |
| 4 | **Manholes** |  | 2026-12-07 → 2026-12-14 (+7d) |  |  |
| 2 | **bedding Works** |  | 2026-10-19 → 2026-10-26 (+7d) |  |  |
| SDR-2-CON-ST-ZA-4250 | Sand bedding for Manholes |  | 2026-10-19 → 2026-10-26 (+7d) |  | 83d → 91d |
| 3 | **Install Manholes** |  | 2026-10-19 → 2026-10-26 (+7d) |  |  |
| SDR-2-CON-ST-ZA-4260 | Manholes Installation |  | 2026-10-19 → 2026-10-26 (+7d) |  | 83d → 91d |
| 4 | **Testing** | 2026-10-20 → 2026-10-27 (+7d) | 2026-11-12 → 2026-11-19 (+7d) |  |  |
| SDR-2-CON-ST-ZA-4270 | Testing for Manholes | 2026-10-20 → 2026-10-27 (+7d) | 2026-11-12 → 2026-11-19 (+7d) |  | 83d → 91d |
| 5 | **Backfilling** | 2026-11-14 → 2026-11-21 (+7d) | 2026-12-07 → 2026-12-14 (+7d) |  |  |
| SDR-2-CON-ST-ZA-4280 | Backfilling for Manholes | 2026-11-14 → 2026-11-21 (+7d) | 2026-12-07 → 2026-12-14 (+7d) |  | 83d → 91d |
| 5 | **Catch basin** |  | 2027-03-29 → 2027-04-05 (+7d) |  |  |
| 2 | **bedding Works** |  | 2027-01-28 → 2027-02-04 (+7d) |  |  |
| SDR-2-CON-ST-ZA-4290 | Sand Dedding for Catch basin |  | 2027-01-28 → 2027-02-04 (+7d) | 65% → 70% | 39d → 33d |
| 3 | **Install Catch basin** |  | 2027-02-23 → 2027-03-02 (+7d) |  |  |
| SDR-2-CON-ST-ZA-4300 | Install Catch basin |  | 2027-02-23 → 2027-03-02 (+7d) | 65% → 70% | 39d → 33d |
| 4 | **Testing** | 2027-03-02 → 2027-03-14 (+12d) | 2027-03-17 → 2027-03-24 (+7d) |  |  |

| ID | Task | Start | Finish | Complete | Total float | Other |
| --- | --- | --- | --- | --- | --- | --- |
| SDR-2-CON-ST-ZA-4310 | Testing for Catch basin pipe | 2027-03-02 → 2027-03-14 (+12d) | 2027-03-17 → 2027-03-24 (+7d) |  | 39d → 33d |  |
| 5 | **Backfilling** | 2027-03-18 → 2027-03-25 (+7d) | 2027-03-29 → 2027-04-05 (+7d) |  |  |  |
| SDR-2-CON-ST-ZA-4320 | Backfilling for Catch basin | 2027-03-18 → 2027-03-25 (+7d) | 2027-03-29 → 2027-04-05 (+7d) |  | 39d → 33d |  |
| 14 | **STORM WATER LINE IN ( PH2-A-MCF0 )** |  | 2027-04-25 → 2027-04-07 (-18d) |  |  |  |
| 8 | **Pipes Works** |  | 2026-12-30 → 2027-01-06 (+7d) |  |  |  |
| 7 | **bedding Works** | 2026-10-19 → 2026-09-21 (-28d) | 2026-11-11 → 2026-11-18 (+7d) |  |  |  |
| SDR-2-CON-ST-ZA-4390 | Sand bedding for GRP Pipes | 2026-10-19 → 2026-09-21 A (-28d) | 2026-11-11 → 2026-11-18 (+7d) | 0% → 50% | 39d → 33d |  |
| 2 | **Pipes Laying** | 2026-09-10 → 2026-10-01 (+21d) | 2026-11-11 → 2026-11-18 (+7d) |  |  |  |
| SDR-2-CON-ST-ZA-4340 | Install ST GRP Pipes | 2026-09-10 A → 2026-10-01 A (+21d) | 2026-11-11 → 2026-11-18 (+7d) |  | 39d → 33d |  |
| 6 | **Testing** | 2026-11-12 → 2026-11-19 (+7d) | 2026-12-06 → 2026-12-13 (+7d) |  |  |  |
| SDR-2-CON-ST-ZA-4380 | Testing ST GRP Pipes | 2026-11-12 → 2026-11-19 (+7d) | 2026-12-06 → 2026-12-13 (+7d) |  | 39d → 33d |  |
| 3 | **Backfilling** | 2026-12-07 → 2026-12-14 (+7d) | 2026-12-30 → 2027-01-06 (+7d) |  |  |  |
| SDR-2-CON-ST-ZA-4350 | Backfilling ST GRP Pipes | 2026-12-07 → 2026-12-14 (+7d) | 2026-12-30 → 2027-01-06 (+7d) |  | 39d → 33d |  |
| 4 | **Manholes** |  | 2027-01-25 → 2027-02-01 (+7d) |  |  |  |
| 1 | **Excavation** |  | 2026-10-19 → 2026-10-26 (+7d) |  |  |  |
| SDR-2-CON-ST-ZA-4360 | Excavation Manholes Section 2 |  | 2026-10-19 → 2026-10-26 (+7d) |  | 2d → 10d |  |
| 2 | **bedding Works** |  | 2026-11-12 → 2026-11-19 (+7d) |  |  |  |
| SDR-2-CON-ST-ZA-4400 | Sand bedding for Manholes |  | 2026-11-12 → 2026-11-19 (+7d) |  | 2d → 10d |  |
| 3 | **Install Manholes** |  | 2026-12-07 → 2026-12-14 (+7d) |  |  |  |
| SDR-2-CON-ST-ZA-4410 | Manholes Installation |  | 2026-12-07 → 2026-12-14 (+7d) |  | 2d → 10d |  |
| 4 | **Testing** | 2026-12-08 → 2026-12-15 (+7d) | 2026-12-31 → 2027-01-07 (+7d) |  |  |  |
| SDR-2-CON-ST-ZA-4420 | Testing for Manholes | 2026-12-08 → 2026-12-15 (+7d) | 2026-12-31 → 2027-01-07 (+7d) |  | 2d → 10d |  |
| 5 | **Backfilling** | 2027-01-02 → 2027-01-09 (+7d) | 2027-01-25 → 2027-02-01 (+7d) |  |  |  |
| SDR-2-CON-ST-ZA-4430 | Backfilling for Manholes | 2027-01-02 → 2027-01-09 (+7d) | 2027-01-25 → 2027-02-01 (+7d) |  | 2d → 10d |  |
| 5 | **Catch basin** |  | 2027-04-25 → 2027-04-07 (-18d) |  |  |  |
| 1 | **Excavation** |  | 2026-12-31 → 2026-10-25 (-67d) |  |  |  |
| SDR-2-CON-ST-ZA-4370 | Excavation for Catch basin Section 2 |  | 2026-12-31 → 2026-10-25 A (-67d) | 50% → 100% | 16d → none |  |
| 2 | **bedding Works** |  | 2027-01-25 → 2027-01-07 (-18d) |  |  |  |
| SDR-2-CON-ST-ZA-4440 | Sand Dedding for Catch basin |  | 2027-01-25 → 2027-01-07 (-18d) | 50% → 65% | 16d → 31d |  |
| 3 | **Install Catch basin** |  | 2027-02-18 → 2027-02-01 (-17d) |  |  |  |
| SDR-2-CON-ST-ZA-4450 | Install Catch basin |  | 2027-02-18 → 2027-02-01 (-17d) | 50% → 65% | 16d → 31d |  |
| 4 | **Testing** | 2027-02-20 → 2027-02-02 (-18d) | 2027-03-21 → 2027-02-27 (-22d) |  |  |  |
| SDR-2-CON-ST-ZA-4460 | Testing for Catch basin pipe | 2027-02-20 → 2027-02-02 (-18d) | 2027-03-21 → 2027-02-27 (-22d) |  | 16d → 31d |  |
| 5 | **Backfilling** | 2027-03-22 → 2027-02-28 (-22d) | 2027-04-25 → 2027-04-07 (-18d) |  |  |  |
| SDR-2-CON-ST-ZA-7010 | Backfilling for Catch basin Section 1 | 2027-03-22 → 2027-02-28 (-22d) | 2027-04-07 → 2027-03-21 (-17d) |  | 16d → 31d |  |
| SDR-2-CON-ST-ZA-4470 | Backfilling for Catch basin Section 2 | 2027-04-08 → 2027-03-22 (-17d) | 2027-04-25 → 2027-04-07 (-18d) |  | 16d → 31d |  |
| 15 | **STORM WATER LINE IN ( PH2-A-MCG0 )** |  | 2027-04-20 → 2027-04-27 (+7d) |  |  |  |
| 8 | **Pipes Works** |  | 2027-01-24 → 2027-01-31 (+7d) |  |  |  |
| 7 | **bedding Works** |  | 2026-11-11 → 2026-11-18 (+7d) |  |  |  |
| SDR-2-CON-ST-ZA-4540 | Sand bedding for GRP Pipes |  | 2026-11-11 → 2026-11-18 (+7d) | 65% → 70% | 39d → 33d |  |
| 2 | **Pipes Laying** |  | 2026-12-06 → 2026-12-13 (+7d) |  |  |  |
| SDR-2-CON-ST-ZA-4490 | Install ST GRP Pipes |  | 2026-12-06 → 2026-12-13 (+7d) | 65% → 70% | 39d → 33d |  |
| 6 | **Testing** | 2026-12-07 → 2026-12-14 (+7d) | 2026-12-30 → 2027-01-06 (+7d) |  |  |  |
| SDR-2-CON-ST-ZA-4530 | Testing ST GRP Pipes | 2026-12-07 → 2026-12-14 (+7d) | 2026-12-30 → 2027-01-06 (+7d) |  | 39d → 33d |  |
| 3 | **Backfilling** | 2026-12-31 → 2027-01-07 (+7d) | 2027-01-24 → 2027-01-31 (+7d) |  |  |  |
| SDR-2-CON-ST-ZA-4500 | Backfilling ST GRP Pipes | 2026-12-31 → 2027-01-07 (+7d) | 2027-01-24 → 2027-01-31 (+7d) |  | 39d → 33d |  |
| 4 | **Manholes** |  | 2027-01-25 → 2027-02-01 (+7d) |  |  |  |
| 1 | **Excavation** |  | 2026-10-19 → 2026-10-26 (+7d) |  |  |  |
| SDR-2-CON-ST-ZA-4510 | Excavation Manholes Section 2 |  | 2026-10-19 → 2026-10-26 (+7d) |  | 21d → 15d |  |
| 2 | **bedding Works** |  | 2026-11-12 → 2026-11-19 (+7d) |  |  |  |
| SDR-2-CON-ST-ZA-4550 | Sand bedding for Manholes |  | 2026-11-12 → 2026-11-19 (+7d) |  | 21d → 15d |  |
| 3 | **Install Manholes** |  | 2026-12-07 → 2026-12-14 (+7d) |  |  |  |
| SDR-2-CON-ST-ZA-4560 | Manholes Installation |  | 2026-12-07 → 2026-12-14 (+7d) |  | 21d → 15d |  |
| 4 | **Testing** | 2026-12-08 → 2026-12-15 (+7d) | 2026-12-31 → 2027-01-07 (+7d) |  |  |  |
| SDR-2-CON-ST-ZA-4570 | Testing for Manholes | 2026-12-08 → 2026-12-15 (+7d) | 2026-12-31 → 2027-01-07 (+7d) |  | 21d → 15d |  |
| 5 | **Backfilling** | 2027-01-02 → 2027-01-09 (+7d) | 2027-01-25 → 2027-02-01 (+7d) |  |  |  |
| SDR-2-CON-ST-ZA-4580 | Backfilling for Manholes | 2027-01-02 → 2027-01-09 (+7d) | 2027-01-25 → 2027-02-01 (+7d) |  | 21d → 15d |  |
| 5 | **Catch basin** |  | 2027-04-20 → 2027-04-27 (+7d) |  |  |  |
| 1 | **Excavation** |  | 2027-01-06 → 2027-01-13 (+7d) |  |  |  |
| SDR-2-CON-ST-ZA-6500 | Excavation for Catch basin Section 1 |  | 2026-12-07 → 2026-10-25 A (-43d) | 75% → 100% | 23d → none |  |
| SDR-2-CON-ST-ZA-4520 | Excavation for Catch basin Section 2 | 2026-12-14 → 2026-10-19 A (-56d) | 2027-01-06 → 2027-01-13 (+7d) | 0% → 25% | 23d → 17d |  |
| 2 | **bedding Works** | 2027-01-07 → 2026-10-20 (-79d) | 2027-01-31 → 2027-02-07 (+7d) |  |  |  |
| SDR-2-CON-ST-ZA-4590 | Sand Bedding for Catch basin | 2027-01-07 → 2026-10-20 A (-79d) | 2027-01-31 → 2027-02-07 (+7d) | 0% → 25% | 23d → 17d | was named Sand Dedding for Catch basin |
| 3 | **Install Catch basin** | 2027-02-01 → 2026-10-20 (-104d) | 2027-02-25 → 2027-03-04 (+7d) |  |  |  |
| SDR-2-CON-ST-ZA-4600 | Install Catch basin | 2027-02-01 → 2026-10-20 A (-104d) | 2027-02-25 → 2027-03-04 (+7d) | 0% → 25% | 23d → 17d |  |
| 4 | **Testing** | 2027-02-27 → 2027-03-06 (+7d) | 2027-03-14 → 2027-03-21 (+7d) |  |  |  |
| SDR-2-CON-ST-ZA-4610 | Testing for Catch basin pipe | 2027-02-27 → 2027-03-06 (+7d) | 2027-03-14 → 2027-03-21 (+7d) |  | 23d → 17d |  |
| 5 | **Backfilling** | 2027-03-15 → 2027-03-22 (+7d) | 2027-04-20 → 2027-04-27 (+7d) |  |  |  |
| SDR-2-CON-ST-ZA-7020 | Backfilling for Catch basin Section 1 | 2027-03-15 → 2027-03-22 (+7d) | 2027-03-30 → 2027-04-06 (+7d) |  | 23d → 17d |  |
| SDR-2-CON-ST-ZA-4620 | Backfilling for Catch basin Section 2 | 2027-04-04 → 2027-04-11 (+7d) | 2027-04-20 → 2027-04-27 (+7d) |  | 20d → 14d |  |

| ID | Task | Start | Finish | Complete | Total float | Predecessors | Other |
| --- | --- | --- | --- | --- | --- | --- | --- |
| 16 | **STORM WATER LINE IN ( PH2-A-MCH0 )** |  | 2027-04-18 → 2027-04-25 (+7d) |  |  |  |  |
| 8 | **Pipes Works** |  | 2027-01-24 → 2027-01-31 (+7d) |  |  |  |  |
| 7 | **bedding Works** |  | 2026-11-11 → 2026-11-18 (+7d) |  |  |  |  |
| SDR-2-CON-ST-ZA-4690 | Sand bedding for GRP Pipes |  | 2026-11-11 → 2026-11-18 (+7d) |  | 5d → 13d |  |  |
| 2 | **Pipes Laying** |  | 2026-12-06 → 2026-12-13 (+7d) |  |  |  |  |
| SDR-2-CON-ST-ZA-4640 | Install ST GRP Pipes |  | 2026-12-06 → 2026-12-13 (+7d) |  | 5d → 13d |  |  |
| 6 | **Testing** | 2026-12-07 → 2026-12-14 (+7d) | 2026-12-30 → 2027-01-06 (+7d) |  |  |  |  |
| SDR-2-CON-ST-ZA-4680 | Testing ST GRP Pipes | 2026-12-07 → 2026-12-14 (+7d) | 2026-12-30 → 2027-01-06 (+7d) |  | 5d → 13d |  |  |
| 3 | **Backfilling** | 2026-12-31 → 2027-01-07 (+7d) | 2027-01-24 → 2027-01-31 (+7d) |  |  |  |  |
| SDR-2-CON-ST-ZA-4650 | Backfilling ST GRP Pipes | 2026-12-31 → 2027-01-07 (+7d) | 2027-01-24 → 2027-01-31 (+7d) |  | 5d → 13d |  |  |
| 4 | **Manholes** |  | 2027-01-25 → 2027-02-01 (+7d) |  |  |  |  |
| 1 | **Excavation** |  | 2026-10-19 → 2026-10-26 (+7d) |  |  |  |  |
| SDR-2-CON-ST-ZA-6350 | Excavation Manholes Section 2 |  | 2026-10-19 → 2026-10-26 (+7d) |  | 7d → 1d |  |  |
| 2 | **bedding Works** | 2026-10-20 → 2026-10-27 (+7d) | 2026-11-12 → 2026-11-19 (+7d) |  |  |  |  |
| SDR-2-CON-ST-ZA-4700 | Sand bedding for Manholes | 2026-10-20 → 2026-10-27 (+7d) | 2026-11-12 → 2026-11-19 (+7d) |  | 7d → 1d |  |  |
| 3 | **Install Manholes** | 2026-11-14 → 2026-11-21 (+7d) | 2026-12-07 → 2026-12-14 (+7d) |  |  |  |  |
| SDR-2-CON-ST-ZA-4710 | Manholes Installation | 2026-11-14 → 2026-11-21 (+7d) | 2026-12-07 → 2026-12-14 (+7d) |  | 7d → 1d |  |  |
| 4 | **Testing** | 2026-12-08 → 2026-12-15 (+7d) | 2026-12-31 → 2027-01-07 (+7d) |  |  |  |  |
| SDR-2-CON-ST-ZA-4720 | Testing for Manholes | 2026-12-08 → 2026-12-15 (+7d) | 2026-12-31 → 2027-01-07 (+7d) |  | 7d → 1d |  |  |
| 5 | **Backfilling** | 2027-01-02 → 2027-01-09 (+7d) | 2027-01-25 → 2027-02-01 (+7d) |  |  |  |  |
| SDR-2-CON-ST-ZA-4730 | Backfilling for Manholes | 2027-01-02 → 2027-01-09 (+7d) | 2027-01-25 → 2027-02-01 (+7d) |  | 7d → 1d |  |  |
| 5 | **Catch basin** |  | 2027-04-18 → 2027-04-25 (+7d) |  |  |  |  |
| 1 | **Excavation** |  | 2026-12-31 → 2027-01-07 (+7d) |  |  |  |  |
| SDR-2-CON-ST-ZA-6530 | Excavation for Catch basin Section 1 |  | 2026-12-07 → 2026-12-14 (+7d) |  | 23d → 17d |  |  |
| SDR-2-CON-ST-ZA-4670 | Excavation for Catch basin Section 2 | 2026-12-08 → 2026-12-15 (+7d) | 2026-12-31 → 2027-01-07 (+7d) |  | 23d → 17d |  |  |
| 2 | **bedding Works** | 2027-01-02 → 2027-01-09 (+7d) | 2027-01-25 → 2027-02-01 (+7d) |  |  |  |  |
| SDR-2-CON-ST-ZA-4740 | Sand Dedding for Catch basin | 2027-01-02 → 2027-01-09 (+7d) | 2027-01-25 → 2027-02-01 (+7d) |  | 23d → 17d |  |  |
| 3 | **Install Catch basin** | 2027-02-01 → 2027-02-08 (+7d) | 2027-02-25 → 2027-03-04 (+7d) |  |  |  |  |
| SDR-2-CON-ST-ZA-4750 | Install Catch basin | 2027-02-01 → 2027-02-08 (+7d) | 2027-02-25 → 2027-03-04 (+7d) |  | 23d → 17d |  |  |
| 4 | **Testing** | 2027-02-27 → 2027-03-06 (+7d) | 2027-03-14 → 2027-03-21 (+7d) |  |  |  |  |
| SDR-2-CON-ST-ZA-4760 | Testing for Catch basin pipe | 2027-02-27 → 2027-03-06 (+7d) | 2027-03-14 → 2027-03-21 (+7d) |  | 23d → 17d |  |  |
| 5 | **Backfilling** | 2027-03-15 → 2027-03-22 (+7d) | 2027-04-18 → 2027-04-25 (+7d) |  |  |  |  |
| SDR-2-CON-ST-ZA-7030 | Backfilling for Catch basin Section 1 | 2027-03-15 → 2027-03-22 (+7d) | 2027-03-30 → 2027-04-06 (+7d) |  | 23d → 17d |  |  |
| SDR-2-CON-ST-ZA-4770 | Backfilling for Catch basin Section 2 | 2027-04-01 → 2027-04-08 (+7d) | 2027-04-18 → 2027-04-25 (+7d) |  | 22d → 16d |  |  |
| 1 | **STORM WATER LINE IN ( PH2-A-MCA0 )** |  | 2027-04-19 → 2027-04-26 (+7d) |  |  |  |  |
| 8 | **Pipes Works** |  | 2027-01-09 → 2027-01-16 (+7d) |  |  |  |  |
| 7 | **bedding Works** |  | 2026-11-11 → 2026-11-18 (+7d) |  |  |  |  |
| SDR-2-CON-ST-ZA-4840 | Sand bedding for GRP Pipes |  | 2026-11-11 → 2026-11-18 (+7d) |  | 21d → 15d |  |  |
| 2 | **Pipes Laying** | 2026-10-19 → 2026-10-22 (+3d) | 2026-11-11 → 2026-11-18 (+7d) |  |  |  |  |
| SDR-2-CON-ST-ZA-4790 | Install ST GRP Pipes | 2026-10-19 → 2026-10-22 A (+3d) | 2026-11-11 → 2026-11-18 (+7d) | 0% → 25% | 21d → 15d |  |  |
| 6 | **Testing** | 2026-11-12 → 2026-11-19 (+7d) | 2026-12-06 → 2026-12-13 (+7d) |  |  |  |  |
| SDR-2-CON-ST-ZA-4830 | Testing ST GRP Pipes | 2026-11-12 → 2026-11-19 (+7d) | 2026-12-06 → 2026-12-13 (+7d) |  | 21d → 15d |  |  |
| 3 | **Backfilling** | 2026-12-16 → 2026-12-23 (+7d) | 2027-01-09 → 2027-01-16 (+7d) |  |  |  |  |
| SDR-2-CON-ST-ZA-4800 | Backfilling ST GRP Pipes | 2026-12-16 → 2026-12-23 (+7d) | 2027-01-09 → 2027-01-16 (+7d) |  | 21d → 15d |  |  |
| 4 | **Manholes** |  | 2027-01-25 → 2027-02-01 (+7d) |  |  |  |  |
| 1 | **Excavation** |  | 2026-10-19 → 2026-10-26 (+7d) |  |  |  |  |
| SDR-2-CON-ST-ZA-4810 | Excavation Manholes Section 2 |  | 2026-10-19 → 2026-10-26 (+7d) |  | 7d → 1d |  |  |
| 2 | **bedding Works** |  | 2026-11-12 → 2026-11-19 (+7d) |  |  |  |  |
| SDR-2-CON-ST-ZA-4850 | Sand bedding for Manholes |  | 2026-11-12 → 2026-11-19 (+7d) |  | 7d → 1d |  |  |
| 3 | **Install Manholes** |  | 2026-12-07 → 2026-12-14 (+7d) |  |  |  |  |
| SDR-2-CON-ST-ZA-4860 | Manholes Installation |  | 2026-12-07 → 2026-12-14 (+7d) |  | 7d → 1d |  |  |
| 4 | **Testing** | 2026-12-08 → 2026-12-15 (+7d) | 2026-12-31 → 2027-01-07 (+7d) |  |  |  |  |
| SDR-2-CON-ST-ZA-4870 | Testing for Manholes | 2026-12-08 → 2026-12-15 (+7d) | 2026-12-31 → 2027-01-07 (+7d) |  | 7d → 1d |  |  |
| 5 | **Backfilling** | 2027-01-02 → 2027-01-09 (+7d) | 2027-01-25 → 2027-02-01 (+7d) |  |  |  |  |
| SDR-2-CON-ST-ZA-4880 | Backfilling for Manholes | 2027-01-02 → 2027-01-09 (+7d) | 2027-01-25 → 2027-02-01 (+7d) |  | 7d → 1d |  |  |
| 5 | **Catch basin** | 2026-11-14 → 2026-10-20 (-25d) | 2027-04-19 → 2027-04-26 (+7d) |  |  |  |  |
| 1 | **Excavation** | 2026-11-14 → 2026-10-20 (-25d) | 2027-01-07 → 2027-01-14 (+7d) |  |  |  |  |
| SDR-2-CON-ST-ZA-6560 | Excavation for Catch basin Section 2 | 2026-12-15 → 2026-10-20 A (-56d) | 2027-01-07 → 2026-12-14 (-24d) | 0% → 10% | 17.7d → 6d | SDR-2-CON-ST-ZA-4820 FS+6d → SDR-2-CON-ST-ZA-4860 FF | resources SIC- Cost [55598.8]; Labor [19.2 h]; Plumber [334.38 h]; Excavator [13.15 h]; Excavator Operator [417.97 h] → SIC- Cost [55598.8]; Labor [19.2 h]; Plumber [334.38 h]; Excavator [13.15 h]; Excavator Operator [14.45 h] |
| SDR-2-CON-ST-ZA-4820 | Excavation for Catch basin Section 1 | 2026-11-14 → 2026-10-21 A (-24d) | 2026-12-07 → 2027-01-14 (+38d) | 0% → 50% | 12d → 11.7d | SDR-2-CON-ST-ZA-4860 FF → SDR-2-CON-ST-ZA-6560 FS+6d | resources SIC- Cost [55598.8]; Labor [19.2 h]; Plumber [334.38 h]; Excavator [13.15 h]; Excavator Operator [14.45 h] → SIC- Cost [55598.8]; Labor [19.2 h]; Plumber [334.38 h]; Excavator [13.15 h]; Excavator Operator [417.97 h] |
| 2 | **bedding Works** | 2027-01-09 → 2026-10-22 (-79d) | 2027-02-01 → 2027-02-08 (+7d) |  |  |  |  |
| SDR-2-CON-ST-ZA-4890 | Sand Dedding for Catch basin | 2027-01-09 → 2026-10-22 A (-79d) | 2027-02-01 → 2027-02-08 (+7d) | 0% → 20% | 17.7d → 11.7d | SDR-2-CON-ST-ZA-6560 → SDR-2-CON-ST-ZA-4820 |  |
| 3 | **Install Catch basin** | 2027-02-02 → 2026-10-24 (-101d) | 2027-02-27 → 2027-03-06 (+7d) |  |  |  |  |
| SDR-2-CON-ST-ZA-4900 | Install Catch basin | 2027-02-02 → 2026-10-24 A (-101d) | 2027-02-27 → 2027-03-06 (+7d) | 0% → 20% | 17.7d → 11.7d |  |  |
| 4 | **Testing** | 2027-02-28 → 2027-03-07 (+7d) | 2027-03-17 → 2027-03-24 (+7d) |  |  |  |  |
| SDR-2-CON-ST-ZA-4910 | Testing for Catch basin pipe | 2027-02-28 → 2027-03-07 (+7d) | 2027-03-17 → 2027-03-24 (+7d) |  | 17.7d → 11.7d |  |  |
| 5 | **Backfilling** | 2027-03-18 → 2027-03-25 (+7d) | 2027-04-19 → 2027-04-26 (+7d) |  |  |  |  |
| SDR-2-CON-ST-ZA-7040 | Backfilling for Catch basin Section 1 | 2027-03-18 → 2027-03-25 (+7d) | 2027-04-03 → 2027-04-10 (+7d) |  | 17.7d → 11.7d |  |  |
| SDR-2-CON-ST-ZA-4920 | Backfilling for Catch basin Section 2 | 2027-04-04 → 2027-04-11 (+7d) | 2027-04-19 → 2027-04-26 (+7d) |  | 17.7d → 11.7d |  |  |
| 17 | **STORM WATER LINE IN ( PH2-A-MCI0 )** |  | 2027-05-11 → 2027-04-24 (-17d) |  |  |  |  |
| 8 | **Pipes Works** |  | 2027-01-24 → 2027-01-31 (+7d) |  |  |  |  |

| ID | Task | Start | Finish | Complete | Total float | Predecessors |
| --- | --- | --- | --- | --- | --- | --- |
| 7 | **bedding Works** |  | 2026-11-11 → 2026-11-18 (+7d) |  |  |  |
| SDR-2-CON-ST-ZA-4990 | Sand bedding for GRP Pipes |  | 2026-11-11 → 2026-11-18 (+7d) | 25% → 50% | 8d → 2d |  |
| 2 | **Pipes Laying** |  | 2026-12-06 → 2026-12-13 (+7d) |  |  |  |
| SDR-2-CON-ST-ZA-4940 | Install ST GRP Pipes |  | 2026-12-06 → 2026-12-13 (+7d) | 25% → 50% | 8d → 2d |  |
| 6 | **Testing** | 2026-12-07 → 2026-12-14 (+7d) | 2026-12-30 → 2027-01-06 (+7d) |  |  |  |
| SDR-2-CON-ST-ZA-4980 | Testing ST GRP Pipes | 2026-12-07 → 2026-12-14 (+7d) | 2026-12-30 → 2027-01-06 (+7d) |  | 8d → 2d |  |
| 3 | **Backfilling** | 2026-12-31 → 2027-01-07 (+7d) | 2027-01-24 → 2027-01-31 (+7d) |  |  |  |
| SDR-2-CON-ST-ZA-4950 | Backfilling ST GRP Pipes | 2026-12-31 → 2027-01-07 (+7d) | 2027-01-24 → 2027-01-31 (+7d) |  | 8d → 2d |  |
| 4 | **Manholes** |  | 2027-01-25 → 2027-02-01 (+7d) |  |  |  |
| 1 | **Excavation** |  | 2026-10-19 → 2026-10-26 (+7d) |  |  |  |
| SDR-2-CON-ST-ZA-4960 | Excavation Manholes Section 2 |  | 2026-10-19 → 2026-10-26 (+7d) |  | 2d → 0d |  |
| 2 | **bedding Works** | 2026-10-20 → 2026-10-27 (+7d) | 2026-11-12 → 2026-11-19 (+7d) |  |  |  |
| SDR-2-CON-ST-ZA-5000 | Sand bedding for Manholes | 2026-10-20 → 2026-10-27 (+7d) | 2026-11-12 → 2026-11-19 (+7d) |  | 2d → 0d |  |
| 3 | **Install Manholes** | 2026-11-14 → 2026-11-21 (+7d) | 2026-12-07 → 2026-12-14 (+7d) |  |  |  |
| SDR-2-CON-ST-ZA-5010 | Manholes Installation | 2026-11-14 → 2026-11-21 (+7d) | 2026-12-07 → 2026-12-14 (+7d) |  | 2d → 0d |  |
| 4 | **Testing** | 2026-12-08 → 2026-12-15 (+7d) | 2026-12-31 → 2027-01-07 (+7d) |  |  |  |
| SDR-2-CON-ST-ZA-5020 | Testing for Manholes | 2026-12-08 → 2026-12-15 (+7d) | 2026-12-31 → 2027-01-07 (+7d) |  | 7d → 1d |  |
| 5 | **Backfilling** | 2027-01-02 → 2027-01-09 (+7d) | 2027-01-25 → 2027-02-01 (+7d) |  |  |  |
| SDR-2-CON-ST-ZA-5030 | Backfilling for Manholes | 2027-01-02 → 2027-01-09 (+7d) | 2027-01-25 → 2027-02-01 (+7d) |  | 7d → 1d |  |
| 5 | **Catch basin** | 2026-12-08 → 2026-10-20 (-49d) | 2027-05-11 → 2027-04-24 (-17d) |  |  |  |
| 1 | **Excavation** | 2026-12-08 → 2026-10-20 (-49d) | 2027-01-31 → 2027-01-07 (-24d) |  |  |  |
| SDR-2-CON-ST-ZA-4970 | Excavation for Catch basin Section 1 | 2026-12-08 → 2026-10-20 A (-49d) | 2026-12-31 → 2026-10-26 A (-66d) | 0% → 100% | 2d → none | SDR-2-CON-ST-ZA-5010 → SDR-2-CON-ST-ZA-6590 FS+5d |
| SDR-2-CON-ST-ZA-6590 | Excavation for Catch basin Section 2 | 2027-01-07 → 2026-10-22 A (-77d) | 2027-01-31 → 2027-01-07 (-24d) | 0% → 20% | 11d → 0d | SDR-2-CON-ST-ZA-4970 FS+5d → SDR-2-CON-ST-ZA-5010 |
| 2 | **bedding Works** | 2027-02-01 → 2026-10-24 (-100d) | 2027-02-25 → 2027-02-07 (-18d) |  |  |  |
| SDR-2-CON-ST-ZA-5040 | Sand Dedding for Catch basin | 2027-02-01 → 2026-10-24 A (-100d) | 2027-02-25 → 2027-02-07 (-18d) | 0% → 20% | 11d → 26d | SDR-2-CON-ST-ZA-6590 → SDR-2-CON-ST-ZA-4970 |
| 3 | **Install Catch basin** | 2027-02-27 → 2026-10-24 (-126d) | 2027-03-27 → 2027-03-04 (-23d) |  |  |  |
| SDR-2-CON-ST-ZA-5050 | Install Catch basin | 2027-02-27 → 2026-10-24 A (-126d) | 2027-03-27 → 2027-03-04 (-23d) | 0% → 20% | 11d → 26d |  |
| 4 | **Testing** | 2027-03-28 → 2027-03-06 (-22d) | 2027-04-10 → 2027-03-23 (-18d) |  |  |  |
| SDR-2-CON-ST-ZA-5060 | Testing for Catch basin pipe | 2027-03-28 → 2027-03-06 (-22d) | 2027-04-10 → 2027-03-23 (-18d) |  | 11d → 26d |  |
| 5 | **Backfilling** | 2027-04-11 → 2027-03-24 (-18d) | 2027-05-11 → 2027-04-24 (-17d) |  |  |  |
| SDR-2-CON-ST-ZA-7050 | Backfilling for Catch basin Section 1 | 2027-04-11 → 2027-03-24 (-18d) | 2027-04-27 → 2027-04-10 (-17d) |  | 11d → 26d |  |
| SDR-2-CON-ST-ZA-5070 | Backfilling for Catch basin Section 2 | 2027-04-28 → 2027-04-11 (-17d) | 2027-05-11 → 2027-04-24 (-17d) |  | 11d → 26d |  |
| 18 | **STORM WATER LINE From STA-A2/10 TO STA-A2/1** |  | 2027-05-27 → 2027-05-30 (+3d) |  |  |  |
| 8 | **Pipes Works** |  | 2027-01-24 → 2027-01-31 (+7d) |  |  |  |
| 7 | **bedding Works** | 2026-10-19 → 2026-10-26 (+7d) | 2026-11-11 → 2026-11-18 (+7d) |  |  |  |
| SDR-2-CON-ST-ZA-5140 | Sand bedding for GRP Pipes | 2026-10-19 → 2026-10-26 (+7d) | 2026-11-11 → 2026-11-18 (+7d) |  | 5d → 13d |  |
| 2 | **Pipes Laying** | 2026-11-12 → 2026-11-19 (+7d) | 2026-12-06 → 2026-12-13 (+7d) |  |  |  |
| SDR-2-CON-ST-ZA-5090 | Install ST GRP Pipes | 2026-11-12 → 2026-11-19 (+7d) | 2026-12-06 → 2026-12-13 (+7d) |  | 5d → 13d |  |
| 6 | **Testing** | 2026-12-07 → 2026-12-14 (+7d) | 2026-12-30 → 2027-01-06 (+7d) |  |  |  |
| SDR-2-CON-ST-ZA-5130 | Testing ST GRP Pipes | 2026-12-07 → 2026-12-14 (+7d) | 2026-12-30 → 2027-01-06 (+7d) |  | 5d → 13d |  |
| 3 | **Backfilling** | 2026-12-31 → 2027-01-07 (+7d) | 2027-01-24 → 2027-01-31 (+7d) |  |  |  |
| SDR-2-CON-ST-ZA-5100 | Backfilling ST GRP Pipes | 2026-12-31 → 2027-01-07 (+7d) | 2027-01-24 → 2027-01-31 (+7d) |  | 5d → 13d |  |
| 4 | **Manholes** | 2026-10-19 → 2026-10-26 (+7d) | 2027-03-20 → 2027-03-27 (+7d) |  |  |  |
| 1 | **Excavation** | 2026-10-19 → 2026-10-26 (+7d) | 2026-12-06 → 2026-12-13 (+7d) |  |  |  |
| SDR-2-CON-ST-ZA-6610 | Excavation Manholes Section 1 | 2026-10-19 → 2026-10-26 (+7d) | 2026-11-11 → 2026-11-18 (+7d) |  | 14d → 15d |  |
| SDR-2-CON-ST-ZA-5110 | Excavation Manholes Section 2 | 2026-11-12 → 2026-11-19 (+7d) | 2026-12-06 → 2026-12-13 (+7d) |  | 14d → 15d |  |
| 2 | **bedding Works** | 2026-12-07 → 2026-12-14 (+7d) | 2026-12-30 → 2027-01-06 (+7d) |  |  |  |
| SDR-2-CON-ST-ZA-5150 | Sand bedding for Manholes | 2026-12-07 → 2026-12-14 (+7d) | 2026-12-30 → 2027-01-06 (+7d) |  | 14d → 15d |  |
| 3 | **Install Manholes** | 2026-12-31 → 2027-01-07 (+7d) | 2027-01-24 → 2027-01-31 (+7d) |  |  |  |
| SDR-2-CON-ST-ZA-5160 | Manholes Installation | 2026-12-31 → 2027-01-07 (+7d) | 2027-01-24 → 2027-01-31 (+7d) |  | 14d → 15d |  |
| 4 | **Testing** | 2027-01-25 → 2027-02-01 (+7d) | 2027-02-17 → 2027-02-25 (+8d) |  |  |  |
| SDR-2-CON-ST-ZA-5170 | Testing for Manholes | 2027-01-25 → 2027-02-01 (+7d) | 2027-02-17 → 2027-02-25 (+8d) |  | 14d → 15d |  |
| 5 | **Backfilling** | 2027-02-18 → 2027-02-27 (+9d) | 2027-03-20 → 2027-03-27 (+7d) |  |  |  |
| SDR-2-CON-ST-ZA-5180 | Backfilling for Manholes | 2027-02-18 → 2027-02-27 (+9d) | 2027-03-20 → 2027-03-27 (+7d) |  | 14d → 15d |  |
| 5 | **Catch basin** | 2027-01-02 → 2027-01-09 (+7d) | 2027-05-27 → 2027-05-30 (+3d) |  |  |  |
| 1 | **Excavation** | 2027-01-02 → 2027-01-09 (+7d) | 2027-02-18 → 2027-02-27 (+9d) |  |  |  |
| SDR-2-CON-ST-ZA-6620 | Excavation for Catch basin Section 1 | 2027-01-02 → 2027-01-09 (+7d) | 2027-01-25 → 2027-02-01 (+7d) |  | 2d → 0d | SDR-2-CON-ST-ZA-4970 → SDR-2-CON-ST-ZA-6590 |
| SDR-2-CON-ST-ZA-5120 | Excavation for Catch basin Section 2 | 2027-01-26 → 2027-02-02 (+7d) | 2027-02-18 → 2027-02-27 (+9d) |  | 2d → 0d |  |
| 2 | **bedding Works** | 2027-02-20 → 2027-02-28 (+8d) | 2027-03-21 → 2027-03-28 (+7d) |  |  |  |
| SDR-2-CON-ST-ZA-5190 | Sand Dedding for Catch basin | 2027-02-20 → 2027-02-28 (+8d) | 2027-03-21 → 2027-03-28 (+7d) |  | 2d → 0d |  |
| 3 | **Install Catch basin** | 2027-03-22 → 2027-03-29 (+7d) | 2027-04-14 → 2027-04-21 (+7d) |  |  |  |
| SDR-2-CON-ST-ZA-5200 | Install Catch basin | 2027-03-22 → 2027-03-29 (+7d) | 2027-04-14 → 2027-04-21 (+7d) |  | 2d → 0d |  |
| 4 | **Testing** | 2027-04-15 → 2027-04-22 (+7d) | 2027-04-28 → 2027-05-05 (+7d) |  |  |  |
| SDR-2-CON-ST-ZA-5210 | Testing for Catch basin pipe | 2027-04-15 → 2027-04-22 (+7d) | 2027-04-28 → 2027-05-05 (+7d) |  | 2d → 0d |  |
| 5 | **Backfilling** | 2027-04-29 → 2027-05-06 (+7d) | 2027-05-27 → 2027-05-30 (+3d) |  |  |  |
| SDR-2-CON-ST-ZA-7060 | Backfilling for Catch basin Section 1 | 2027-04-29 → 2027-05-06 (+7d) | 2027-05-13 → 2027-05-26 (+13d) |  | 2d → 0d |  |
| SDR-2-CON-ST-ZA-5220 | Backfilling for Catch basin Section 2 | 2027-05-06 → 2027-05-09 (+3d) | 2027-05-27 → 2027-05-30 (+3d) |  | 2d → 0d | SDR-2-CON-ST-ZA-7060 SS+6d → SDR-2-CON-ST-ZA-7060 SS+2d |
| 19 | **STORM WATER LINE From IP A7 To Pond A** |  | 2027-04-28 → 2027-05-05 (+7d) |  |  |  |
| 8 | **Pipes Works** |  | 2027-01-25 → 2027-02-01 (+7d) |  |  |  |
| 1 | **Excavation** |  | 2026-10-19 → 2026-10-26 (+7d) |  |  |  |

| ID | Task | Start | Finish | Total float | Predecessors |
| --- | --- | --- | --- | --- | --- |
| SDR-2-CON-ST-ZA-5830 | Excavation for GRP Pipes Section 2 |  | 2026-10-19 → 2026-10-26 (+7d) | 13d → 7d |  |
| SDR-2-CON-ST-ZA-6630 | Excavation for GRP Pipes Section 1 |  | 2026-10-19 → 2026-10-26 (+7d) | 8d → 2d |  |
| 7 | **bedding Works** | 2026-10-20 → 2026-10-27 (+7d) | 2026-11-12 → 2026-11-19 (+7d) |  |  |
| SDR-2-CON-ST-ZA-5890 | Sand bedding for GRP Pipes | 2026-10-20 → 2026-10-27 (+7d) | 2026-11-12 → 2026-11-19 (+7d) | 13d → 7d |  |
| 2 | **Pipes Laying** | 2026-11-14 → 2026-11-21 (+7d) | 2026-12-07 → 2026-12-14 (+7d) |  |  |
| SDR-2-CON-ST-ZA-5840 | Install ST GRP Pipes | 2026-11-14 → 2026-11-21 (+7d) | 2026-12-07 → 2026-12-14 (+7d) | 13d → 7d |  |
| 6 | **Testing** | 2026-12-08 → 2026-12-15 (+7d) | 2026-12-31 → 2027-01-07 (+7d) |  |  |
| SDR-2-CON-ST-ZA-5880 | Testing ST GRP Pipes | 2026-12-08 → 2026-12-15 (+7d) | 2026-12-31 → 2027-01-07 (+7d) | 13d → 7d |  |
| 3 | **Backfilling** | 2027-01-02 → 2027-01-09 (+7d) | 2027-01-25 → 2027-02-01 (+7d) |  |  |
| SDR-2-CON-ST-ZA-5850 | Backfilling ST GRP Pipes | 2027-01-02 → 2027-01-09 (+7d) | 2027-01-25 → 2027-02-01 (+7d) | 13d → 7d |  |
| 4 | **Manholes** | 2026-10-19 → 2026-10-26 (+7d) | 2027-03-23 → 2027-03-30 (+7d) |  |  |
| 1 | **Excavation** | 2026-10-19 → 2026-10-26 (+7d) | 2026-12-09 → 2026-12-16 (+7d) |  |  |
| SDR-2-CON-ST-ZA-6640 | Excavation Manholes Section 1 | 2026-10-19 → 2026-10-26 (+7d) | 2026-11-11 → 2026-11-18 (+7d) | 8d → 2d |  |
| SDR-2-CON-ST-ZA-5860 | Excavation Manholes Section 2 | 2026-11-16 → 2026-11-23 (+7d) | 2026-12-09 → 2026-12-16 (+7d) | 8d → 2d |  |
| 2 | **bedding Works** | 2026-12-10 → 2026-12-17 (+7d) | 2027-01-03 → 2027-01-10 (+7d) |  |  |
| SDR-2-CON-ST-ZA-5900 | Sand bedding for Manholes | 2026-12-10 → 2026-12-17 (+7d) | 2027-01-03 → 2027-01-10 (+7d) | 8d → 2d |  |
| 3 | **Install Manholes** | 2027-01-04 → 2027-01-11 (+7d) | 2027-01-27 → 2027-02-03 (+7d) |  |  |
| SDR-2-CON-ST-ZA-5910 | Manholes Installation | 2027-01-04 → 2027-01-11 (+7d) | 2027-01-27 → 2027-02-03 (+7d) | 8d → 2d |  |
| 4 | **Testing** | 2027-01-28 → 2027-02-04 (+7d) | 2027-02-21 → 2027-03-01 (+8d) |  |  |
| SDR-2-CON-ST-ZA-5920 | Testing for Manholes | 2027-01-28 → 2027-02-04 (+7d) | 2027-02-21 → 2027-03-01 (+8d) | 8d → 2d |  |
| 5 | **Backfilling** | 2027-02-23 → 2027-03-02 (+7d) | 2027-03-23 → 2027-03-30 (+7d) |  |  |
| SDR-2-CON-ST-ZA-5930 | Backfilling for Manholes | 2027-02-23 → 2027-03-02 (+7d) | 2027-03-23 → 2027-03-30 (+7d) | 8d → 2d |  |
| 5 | **Catch basin** | 2026-12-08 → 2026-12-15 (+7d) | 2027-04-28 → 2027-05-05 (+7d) |  |  |
| 1 | **Excavation** | 2026-12-08 → 2026-12-15 (+7d) | 2027-01-25 → 2027-02-01 (+7d) |  |  |
| SDR-2-CON-ST-ZA-6650 | Excavation for Catch basin Section 1 | 2026-12-08 → 2026-12-15 (+7d) | 2026-12-31 → 2027-01-07 (+7d) | 12d → 6d | SDR-2-CON-ST-ZA-4820 → SDR-2-CON-ST-ZA-6560 |
| SDR-2-CON-ST-ZA-5870 | Excavation for Catch basin Section 2 | 2027-01-02 → 2027-01-09 (+7d) | 2027-01-25 → 2027-02-01 (+7d) | 12d → 6d |  |
| 2 | **bedding Works** | 2027-01-26 → 2027-02-02 (+7d) | 2027-02-18 → 2027-02-27 (+9d) |  |  |
| SDR-2-CON-ST-ZA-5940 | Sand Dedding for Catch basin | 2027-01-26 → 2027-02-02 (+7d) | 2027-02-18 → 2027-02-27 (+9d) | 12d → 6d |  |
| 3 | **Install Catch basin** | 2027-02-20 → 2027-02-28 (+8d) | 2027-03-21 → 2027-03-28 (+7d) |  |  |
| SDR-2-CON-ST-ZA-5950 | Install Catch basin | 2027-02-20 → 2027-02-28 (+8d) | 2027-03-21 → 2027-03-28 (+7d) | 12d → 6d |  |
| 4 | **Testing** | 2027-03-22 → 2027-03-29 (+7d) | 2027-03-30 → 2027-04-06 (+7d) |  |  |
| SDR-2-CON-ST-ZA-5960 | Testing for Catch basin pipe | 2027-03-22 → 2027-03-29 (+7d) | 2027-03-30 → 2027-04-06 (+7d) | 12d → 6d |  |
| 5 | **Backfilling** | 2027-04-05 → 2027-04-12 (+7d) | 2027-04-28 → 2027-05-05 (+7d) |  |  |
| SDR-2-CON-ST-ZA-5970 | Backfilling for Catch basin | 2027-04-05 → 2027-04-12 (+7d) | 2027-04-28 → 2027-05-05 (+7d) | 8d → 2d |  |
| 2 | **Concrete Box culverts** |  | 2026-12-15 → 2026-12-22 (+7d) |  |  |
| 6 | **For Pond A** |  | 2026-11-11 → 2026-11-18 (+7d) |  |  |
| 3 | **Plain Concrete** | 2026-10-19 → 2026-10-26 (+7d) | 2026-10-25 → 2026-11-01 (+7d) |  |  |
| SDR-2-CON-ST-ZA-3290 | Plain Concrete for box culvert | 2026-10-19 → 2026-10-26 (+7d) | 2026-10-25 → 2026-11-01 (+7d) | 44d → 38d |  |
| 4 | **Steel Reinforcement** | 2026-10-26 → 2026-11-02 (+7d) | 2026-11-03 → 2026-11-10 (+7d) |  |  |
| SDR-2-CON-ST-ZA-3300 | Steel Reinforcement for box culverts | 2026-10-26 → 2026-11-02 (+7d) | 2026-11-03 → 2026-11-10 (+7d) | 44d → 38d |  |
| 5 | **Reinforced Concrete** | 2026-11-04 → 2026-11-11 (+7d) | 2026-11-11 → 2026-11-18 (+7d) |  |  |
| SDR-2-CON-ST-ZA-3310 | Reinforced Concrete for box culvert | 2026-11-04 → 2026-11-11 (+7d) | 2026-11-11 → 2026-11-18 (+7d) | 44d → 38d |  |
| 7 | **For Pond B** |  | 2026-11-21 → 2026-11-28 (+7d) |  |  |
| 2 | **Backfilling with common / suitable excavated material** | 2026-10-19 → 2026-10-26 (+7d) | 2026-10-27 → 2026-11-03 (+7d) |  |  |
| SDR-2-CON-ST-ZA-6260 | Backfilling with common / suitable excavated material or with suitable imported material | 2026-10-19 → 2026-10-26 (+7d) | 2026-10-27 → 2026-11-03 (+7d) | 26d → 21d |  |
| 3 | **Plain Concrete** | 2026-10-28 → 2026-11-04 (+7d) | 2026-11-03 → 2026-11-10 (+7d) |  |  |
| SDR-2-CON-ST-ZA-6270 | Plain Concrete for box culvert | 2026-10-28 → 2026-11-04 (+7d) | 2026-11-03 → 2026-11-10 (+7d) | 26d → 21d |  |
| 4 | **Steel Reinforcement** | 2026-11-04 → 2026-11-11 (+7d) | 2026-11-12 → 2026-11-19 (+7d) |  |  |
| SDR-2-CON-ST-ZA-6280 | Steel Reinforcement for box culverts | 2026-11-04 → 2026-11-11 (+7d) | 2026-11-12 → 2026-11-19 (+7d) | 26d → 21d |  |
| 5 | **Reinforced Concrete** | 2026-11-14 → 2026-11-21 (+7d) | 2026-11-21 → 2026-11-28 (+7d) |  |  |
| SDR-2-CON-ST-ZA-6290 | Reinforced Concrete for box culvert | 2026-11-14 → 2026-11-21 (+7d) | 2026-11-21 → 2026-11-28 (+7d) | 26d → 21d |  |
| 8 | **For Pond C** | 2026-10-22 → 2026-10-29 (+7d) | 2026-12-15 → 2026-12-22 (+7d) |  |  |
| 1 | **Excavation** | 2026-10-22 → 2026-10-29 (+7d) | 2026-11-02 → 2026-11-09 (+7d) |  |  |
| SDR-2-CON-ST-ZA-6300 | Excavation for Box Culvert. | 2026-10-22 → 2026-10-29 (+7d) | 2026-11-02 → 2026-11-09 (+7d) | 26d → 20d |  |
| 2 | **Backfilling with common / suitable excavated material** | 2026-11-03 → 2026-11-10 (+7d) | 2026-11-11 → 2026-11-18 (+7d) |  |  |
| SDR-2-CON-ST-ZA-6310 | Backfilling with common / suitable excavated material or with suitable imported material | 2026-11-03 → 2026-11-10 (+7d) | 2026-11-11 → 2026-11-18 (+7d) | 26d → 20d |  |
| 3 | **Plain Concrete** | 2026-11-12 → 2026-11-19 (+7d) | 2026-11-18 → 2026-11-25 (+7d) |  |  |
| SDR-2-CON-ST-ZA-6320 | Plain Concrete for box culvert | 2026-11-12 → 2026-11-19 (+7d) | 2026-11-18 → 2026-11-25 (+7d) | 26d → 20d |  |
| 4 | **Steel Reinforcement** | 2026-11-19 → 2026-11-26 (+7d) | 2026-11-28 → 2026-12-05 (+7d) |  |  |
| SDR-2-CON-ST-ZA-6330 | Steel Reinforcement for box culverts | 2026-11-19 → 2026-11-26 (+7d) | 2026-11-28 → 2026-12-05 (+7d) | 26d → 20d |  |
| 5 | **Reinforced Concrete** | 2026-12-08 → 2026-12-15 (+7d) | 2026-12-15 → 2026-12-22 (+7d) |  |  |
| SDR-2-CON-ST-ZA-6340 | Reinforced Concrete for box culvert | 2026-12-08 → 2026-12-15 (+7d) | 2026-12-15 → 2026-12-22 (+7d) | 26d → 20d |  |
| 3 | **Drainage works for ponds and open canals** |  | 2027-04-13 → 2027-04-20 (+7d) |  |  |
| 7 | **Pond A** |  | 2027-01-06 → 2027-01-13 (+7d) |  |  |
| 3 | **Sand lining for pond bed** |  | 2026-11-18 → 2026-11-25 (+7d) |  |  |
| SDR-2-CON-ST-ZA-6690 | Sand lining for pond bed Section 1 & Section 2 |  | 2026-10-21 → 2026-10-28 (+7d) | 44d → 38d |  |
| SDR-2-CON-ST-ZA-6150 | Sand lining for pond bed Section 3 & Section 4 | 2026-10-26 → 2026-11-02 (+7d) | 2026-11-18 → 2026-11-25 (+7d) | 44d → 38d |  |
| 6 | **Pipe Encasements,** | 2026-11-19 → 2026-11-26 (+7d) | 2026-12-13 → 2026-12-20 (+7d) |  |  |
| SDR-2-CON-ST-ZA-6180 | Pipe encasement | 2026-11-19 → 2026-11-26 (+7d) | 2026-12-13 → 2026-12-20 (+7d) | 44d → 38d |  |
| 5 | **Concrete Outfalls** | 2026-12-14 → 2026-12-21 (+7d) | 2027-01-06 → 2027-01-13 (+7d) |  |  |

| ID | Task | Start | Finish | Complete | Total float |
| --- | --- | --- | --- | --- | --- |
| SDR-2-CON-ST-ZA-6170 | Concrete Outfall structure. | 2026-12-14 → 2026-12-21 (+7d) | 2027-01-06 → 2027-01-13 (+7d) |  | 44d → 38d |
| 8 | **Pond B** |  | 2027-04-13 → 2027-04-20 (+7d) |  |  |
| 3 | **Sand lining for pond bed** |  | 2027-01-06 → 2027-01-13 (+7d) |  |  |
| SDR-2-CON-ST-ZA-6720 | Sand lining for pond bed Section 1 |  | 2026-12-15 → 2026-12-22 (+7d) |  | 29d → 37d |
| SDR-2-CON-ST-ZA-6210 | Sand lining for pond bed Section 2 | 2026-12-16 → 2026-12-23 (+7d) | 2027-01-06 → 2027-01-13 (+7d) |  | 29d → 37d |
| 6 | **Pipe Encasements,** | 2027-01-07 → 2027-01-14 (+7d) | 2027-01-31 → 2027-02-07 (+7d) |  |  |
| SDR-2-CON-ST-ZA-6240 | Pipe encasement | 2027-01-07 → 2027-01-14 (+7d) | 2027-01-31 → 2027-02-07 (+7d) |  | 29d → 37d |
| 5 | **Concrete Outfalls** | 2027-02-01 → 2027-02-08 (+7d) | 2027-02-25 → 2027-03-04 (+7d) |  |  |
| SDR-2-CON-ST-ZA-6230 | Concrete Outfall structure. | 2027-02-01 → 2027-02-08 (+7d) | 2027-02-25 → 2027-03-04 (+7d) |  | 29d → 37d |
| 4 | **Loose Riprap** | 2027-03-21 → 2027-03-28 (+7d) | 2027-04-13 → 2027-04-20 (+7d) |  |  |
| SDR-2-CON-ST-ZA-6220 | Loose Riprap work | 2027-03-21 → 2027-03-28 (+7d) | 2027-04-13 → 2027-04-20 (+7d) |  | 14d → 22d |
| 9 | **Pond C** |  | 2027-03-21 → 2027-03-28 (+7d) |  |  |
| 1 | **Excavation** |  | 2026-11-15 → 2026-11-22 (+7d) |  |  |
| SDR-2-CON-ST-ZA-6740 | Excavation for cutting material. Section 2 |  | 2026-10-21 → 2026-10-28 (+7d) |  | 4d → 1d |
| SDR-2-CON-ST-ZA-3320 | Excavation for cutting material. Section 3 | 2026-10-22 → 2026-10-29 (+7d) | 2026-11-15 → 2026-11-22 (+7d) |  | 4d → 1d |
| 3 | **Sand lining for pond bed** | 2026-11-16 → 2026-11-23 (+7d) | 2026-12-31 → 2027-01-07 (+7d) |  |  |
| SDR-2-CON-ST-ZA-6750 | Sand lining for pond bed Section 1 | 2026-11-16 → 2026-11-23 (+7d) | 2026-12-08 → 2026-12-15 (+7d) |  | 4d → 1d |
| SDR-2-CON-ST-ZA-3340 | Sand lining for pond bed Section 2 &Section 3 | 2026-12-09 → 2026-12-16 (+7d) | 2026-12-31 → 2027-01-07 (+7d) |  | 4d → 1d |
| 6 | **Pipe Encasements,** | 2027-01-02 → 2027-01-09 (+7d) | 2027-01-25 → 2027-02-01 (+7d) |  |  |
| SDR-2-CON-ST-ZA-3370 | Pipe encasement | 2027-01-02 → 2027-01-09 (+7d) | 2027-01-25 → 2027-02-01 (+7d) |  | 4d → 1d |
| 5 | **Concrete Outfalls** | 2027-01-26 → 2027-02-02 (+7d) | 2027-02-18 → 2027-02-27 (+9d) |  |  |
| SDR-2-CON-ST-ZA-3360 | Concrete Outfall structure. | 2027-01-26 → 2027-02-02 (+7d) | 2027-02-18 → 2027-02-27 (+9d) |  | 4d → 1d |
| 4 | **Loose Riprap** | 2027-02-20 → 2027-02-28 (+8d) | 2027-03-21 → 2027-03-28 (+7d) |  |  |
| SDR-2-CON-ST-ZA-3350 | Loose Riprap work | 2027-02-20 → 2027-02-28 (+8d) | 2027-03-21 → 2027-03-28 (+7d) |  | 4d → 1d |
| ZG | **ZONE G** |  | 2026-10-28 → 2026-11-04 (+7d) |  |  |
| 11 | **STORM WATER LINE IN ( PH2-G-MCE0 )** |  | 2026-10-21 → 2026-10-28 (+7d) |  |  |
| 4 | **Manholes** |  | 2026-10-21 → 2026-10-28 (+7d) |  |  |
| 4 | **Testing** |  | 2026-10-21 → 2026-10-28 (+7d) |  |  |
| SDR-2-CON-ST-ZA-5470 | Testing for Manholes |  | 2026-10-21 → 2026-10-28 (+7d) |  | 159d → 153d |
| 12 | **STORM WATER LINE IN ( PH2-G-MCF0 )** |  | 2026-10-21 → 2026-10-28 (+7d) |  |  |
| 4 | **Manholes** |  | 2026-10-21 → 2026-10-28 (+7d) |  |  |
| 4 | **Testing** |  | 2026-10-21 → 2026-10-28 (+7d) |  |  |
| SDR-2-CON-ST-ZA-5620 | Testing for Manholes |  | 2026-10-21 → 2026-10-28 (+7d) |  | 92d → 86d |
| 13 | **STORM WATER LINE IN ( PH2-G-MCG0 )** |  | 2026-10-28 → 2026-11-04 (+7d) |  |  |
| 4 | **Manholes** |  | 2026-10-28 → 2026-11-04 (+7d) |  |  |
| 4 | **Testing** |  | 2026-10-28 → 2026-11-04 (+7d) |  |  |
| SDR-2-CON-ST-ZA-6070 | Testing for Manholes |  | 2026-10-28 → 2026-11-04 (+7d) |  | 92d → 86d |
| SN | **Sewerage Network** |  | 2027-04-14 → 2027-04-21 (+7d) |  |  |
| ZA | **ZONE A** |  | 2027-04-14 → 2027-04-21 (+7d) |  |  |
| 3 | **LINE 1 ( PH2-A-MCA0 )** |  | 2026-11-14 → 2026-11-21 (+7d) |  |  |
| 7 | **Pipes Work** |  | 2026-11-14 → 2026-11-21 (+7d) |  |  |
| 2 | **Pipes Laying** |  | 2026-10-19 → 2026-10-26 (+7d) |  |  |
| SDR-2-CON-SE-ZA-1010 | 200 mm GRP Pipe Laying |  | 2026-10-19 → 2026-10-26 (+7d) |  | 112d → 106d |
| 3 | **Testing** |  | 2026-10-20 → 2026-10-27 (+7d) |  |  |
| SDR-2-CON-SE-ZA-1020 | Testing of 200 mm GRP Pipe. |  | 2026-10-20 → 2026-10-27 (+7d) |  | 111d → 105d |
| 6 | **Backfilling** | 2026-10-21 → 2026-10-28 (+7d) | 2026-11-14 → 2026-11-21 (+7d) |  |  |
| SDR-2-CON-SE-ZA-1430 | Backfilling of 200 mm GRP Pipe. | 2026-10-21 → 2026-10-28 (+7d) | 2026-11-14 → 2026-11-21 (+7d) |  | 111d → 105d |
| 4 | **Manholes** |  | 2026-11-12 → 2026-11-19 (+7d) |  |  |
| 3 | **Install Manholes** |  | 2026-10-20 → 2026-10-26 (+6d) |  |  |
| SDR-2-CON-SE-ZA-1040 | Manhole Installation |  | 2026-10-20 → 2026-10-26 A (+6d) | 90% → 100% | 166d → none |
| 4 | **Testing** |  | 2026-10-19 → 2026-10-26 (+7d) |  |  |
| SDR-2-CON-SE-ZA-1050 | Testing |  | 2026-10-19 → 2026-10-26 (+7d) |  | 122d → 116d |
| 5 | **Backfilling** | 2026-10-20 → 2026-10-27 (+7d) | 2026-11-12 → 2026-11-19 (+7d) |  |  |
| SDR-2-CON-SE-ZA-1440 | Backfilling | 2026-10-20 → 2026-10-27 (+7d) | 2026-11-12 → 2026-11-19 (+7d) |  | 122d → 116d |
| 4 | **LINE 2 AND LINE 3 ( PH2-A-MCC0 )** |  | 2027-02-17 → 2027-02-25 (+8d) |  |  |
| 7 | **Pipes Work** |  | 2027-02-17 → 2027-02-25 (+8d) |  |  |
| 2 | **Pipes Laying** |  | 2026-11-08 → 2026-11-15 (+7d) |  |  |
| SDR-2-CON-SE-ZA-1470 | 200 mm GRP Pipe Laying |  | 2026-11-08 → 2026-11-15 (+7d) |  | 105d → 99d |
| 3 | **Testing** |  | 2027-01-24 → 2027-01-31 (+7d) |  |  |
| SDR-2-CON-SE-ZA-1480 | Testing of 200 mm GRP Pipe. |  | 2027-01-24 → 2027-01-31 (+7d) |  | 39d → 33d |
| 6 | **Backfilling** | 2027-01-25 → 2027-02-01 (+7d) | 2027-02-17 → 2027-02-25 (+8d) |  |  |
| SDR-2-CON-SE-ZA-1530 | Backfilling of 200 mm GRP Pipe. | 2027-01-25 → 2027-02-01 (+7d) | 2027-02-17 → 2027-02-25 (+8d) |  | 39d → 33d |
| 4 | **Manholes** |  | 2026-12-02 → 2026-12-09 (+7d) |  |  |
| 4 | **Testing** |  | 2026-11-08 → 2026-11-15 (+7d) |  |  |
| SDR-2-CON-SE-ZA-1510 | Testing |  | 2026-11-08 → 2026-11-15 (+7d) |  | 105d → 99d |
| 5 | **Backfilling** | 2026-11-09 → 2026-11-16 (+7d) | 2026-12-02 → 2026-12-09 (+7d) |  |  |
| SDR-2-CON-SE-ZA-1540 | Backfilling | 2026-11-09 → 2026-11-16 (+7d) | 2026-12-02 → 2026-12-09 (+7d) |  | 105d → 99d |
| 5 | **LINE 4 AND LINE 5 ( PH2-A-MCD0 )** |  | 2027-04-14 → 2027-04-21 (+7d) |  |  |
| 7 | **Pipes Work** |  | 2027-02-17 → 2027-02-25 (+8d) |  |  |
| 2 | **Pipes Laying** |  | 2026-10-19 → 2026-10-26 (+7d) |  |  |

| ID | Task | Start | Finish | Total float |
| --- | --- | --- | --- | --- |
| SDR-2-CON-SE-ZA-1570 | 200 mm GRP Pipe Laying |  | 2026-10-19 → 2026-10-26 (+7d) | 122d → 116d |
| 3 | **Testing** |  | 2027-01-24 → 2027-01-31 (+7d) |  |
| SDR-2-CON-SE-ZA-1580 | Testing of 200 mm GRP Pipe. |  | 2027-01-24 → 2027-01-31 (+7d) | 39d → 33d |
| 6 | **Backfilling** | 2027-01-25 → 2027-02-01 (+7d) | 2027-02-17 → 2027-02-25 (+8d) |  |
| SDR-2-CON-SE-ZA-1630 | Backfilling of 200 mm GRP Pipe. | 2027-01-25 → 2027-02-01 (+7d) | 2027-02-17 → 2027-02-25 (+8d) | 39d → 33d |
| 4 | **Manholes** |  | 2027-04-14 → 2027-04-21 (+7d) |  |
| 4 | **Testing** |  | 2027-01-25 → 2027-02-01 (+7d) |  |
| SDR-2-CON-SE-ZA-1610 | Testing |  | 2027-01-25 → 2027-02-01 (+7d) | 47d → 49d |
| 5 | **Backfilling** | 2027-03-22 → 2027-03-29 (+7d) | 2027-04-14 → 2027-04-21 (+7d) |  |
| SDR-2-CON-SE-ZA-2690 | Backfilling | 2027-03-22 → 2027-03-29 (+7d) | 2027-04-14 → 2027-04-21 (+7d) | 4d → 6d |
| 6 | **LINE 6 AND LINE 7 ( PH2-A-MCE0 )** |  | 2027-02-18 → 2027-02-27 (+9d) |  |
| 7 | **Pipes Work** |  | 2027-02-18 → 2027-02-27 (+9d) |  |
| 2 | **Pipes Laying** |  | 2026-12-24 → 2026-12-19 (-5d) |  |
| SDR-2-CON-SE-ZA-1670 | 200 mm GRP Pipe Laying |  | 2026-12-24 → 2026-12-19 (-5d) | 72d → 77d |
| 3 | **Testing** |  | 2027-01-25 → 2027-02-01 (+7d) |  |
| SDR-2-CON-SE-ZA-1680 | Testing of 200 mm GRP Pipe. |  | 2027-01-25 → 2027-02-01 (+7d) | 45d → 39d |
| 6 | **Backfilling** | 2027-01-26 → 2027-02-02 (+7d) | 2027-02-18 → 2027-02-27 (+9d) |  |
| SDR-2-CON-SE-ZA-1730 | Backfilling of 200 mm GRP Pipe. | 2027-01-26 → 2027-02-02 (+7d) | 2027-02-18 → 2027-02-27 (+9d) | 45d → 39d |
| 4 | **Manholes** |  | 2027-01-28 → 2027-02-04 (+7d) |  |
| 4 | **Testing** |  | 2026-12-29 → 2027-01-05 (+7d) |  |
| SDR-2-CON-SE-ZA-1710 | Testing |  | 2026-12-29 → 2027-01-05 (+7d) | 63d → 57d |
| 5 | **Backfilling** | 2027-01-05 → 2027-01-12 (+7d) | 2027-01-28 → 2027-02-04 (+7d) |  |
| SDR-2-CON-SE-ZA-1740 | Backfilling | 2027-01-05 → 2027-01-12 (+7d) | 2027-01-28 → 2027-02-04 (+7d) | 63d → 57d |
| 7 | **LINE 8 AND LINE 9 ( PH2-A-MCF0 )** |  | 2026-11-18 → 2026-11-25 (+7d) |  |
| 7 | **Pipes Work** |  | 2026-11-12 → 2026-11-19 (+7d) |  |
| 2 | **Pipes Laying** |  | 2026-10-19 → 2026-10-26 (+7d) |  |
| SDR-2-CON-SE-ZA-1770 | 200 mm GRP Pipe Laying |  | 2026-10-19 → 2026-10-26 (+7d) | 122d → 116d |
| 3 | **Testing** |  | 2026-10-19 → 2026-10-26 (+7d) |  |
| SDR-2-CON-SE-ZA-1780 | Testing of 200 mm GRP Pipe. |  | 2026-10-19 → 2026-10-26 (+7d) | 122d → 116d |
| 6 | **Backfilling** | 2026-10-20 → 2026-10-27 (+7d) | 2026-11-12 → 2026-11-19 (+7d) |  |
| SDR-2-CON-SE-ZA-1830 | Backfilling of 200 mm GRP Pipe. | 2026-10-20 → 2026-10-27 (+7d) | 2026-11-12 → 2026-11-19 (+7d) | 122d → 116d |
| 4 | **Manholes** |  | 2026-11-18 → 2026-11-25 (+7d) |  |
| 4 | **Testing** |  | 2026-10-19 → 2026-10-26 (+7d) |  |
| SDR-2-CON-SE-ZA-1810 | Testing |  | 2026-10-19 → 2026-10-26 (+7d) | 124d → 118d |
| 5 | **Backfilling** | 2026-10-29 → 2026-11-05 (+7d) | 2026-11-18 → 2026-11-25 (+7d) |  |
| SDR-2-CON-SE-ZA-1840 | Backfilling | 2026-10-29 → 2026-11-05 (+7d) | 2026-11-18 → 2026-11-25 (+7d) | 124d → 118d |
| 8 | **LINE 10 AND LINE 11 ( PH2-A-MCG0 )** |  | 2027-02-11 → 2027-02-18 (+7d) |  |
| 7 | **Pipes Work** |  | 2027-01-31 → 2027-02-07 (+7d) |  |
| 2 | **Pipes Laying** |  | 2026-10-19 → 2026-10-26 (+7d) |  |
| SDR-2-CON-SE-ZA-1870 | 200 mm GRP Pipe Laying |  | 2026-10-19 → 2026-10-26 (+7d) | 112d → 106d |
| 3 | **Testing** |  | 2027-01-07 → 2027-01-14 (+7d) |  |
| SDR-2-CON-SE-ZA-1880 | Testing of 200 mm GRP Pipe. |  | 2027-01-07 → 2027-01-14 (+7d) | 44d → 38d |
| 6 | **Backfilling** | 2027-01-07 → 2027-01-14 (+7d) | 2027-01-31 → 2027-02-07 (+7d) |  |
| SDR-2-CON-SE-ZA-1930 | Backfilling of 200 mm GRP Pipe. | 2027-01-07 → 2027-01-14 (+7d) | 2027-01-31 → 2027-02-07 (+7d) | 44d → 38d |
| 4 | **Manholes** |  | 2027-02-11 → 2027-02-18 (+7d) |  |
| 4 | **Testing** |  | 2027-01-07 → 2027-01-14 (+7d) |  |
| SDR-2-CON-SE-ZA-1910 | Testing |  | 2027-01-07 → 2027-01-14 (+7d) | 44d → 38d |
| 5 | **Backfilling** | 2027-01-19 → 2027-01-26 (+7d) | 2027-02-11 → 2027-02-18 (+7d) |  |
| SDR-2-CON-SE-ZA-1940 | Backfilling | 2027-01-19 → 2027-01-26 (+7d) | 2027-02-11 → 2027-02-18 (+7d) | 44d → 38d |
| 9 | **LINE 12 AND LINE 13 ( PH2-A-MCH0 )** |  | 2026-12-07 → 2026-12-14 (+7d) |  |
| 7 | **Pipes Work** |  | 2026-12-07 → 2026-12-14 (+7d) |  |
| 2 | **Pipes Laying** |  | 2026-10-19 → 2026-10-26 (+7d) |  |
| SDR-2-CON-SE-ZA-1970 | 200 mm GRP Pipe Laying |  | 2026-10-19 → 2026-10-26 (+7d) | 116d → 110d |
| 3 | **Testing** | 2026-10-20 → 2026-10-27 (+7d) | 2026-11-12 → 2026-11-19 (+7d) |  |
| SDR-2-CON-SE-ZA-1980 | Testing of 200 mm GRP Pipe. | 2026-10-20 → 2026-10-27 (+7d) | 2026-11-12 → 2026-11-19 (+7d) | 116d → 110d |
| 6 | **Backfilling** | 2026-11-14 → 2026-11-21 (+7d) | 2026-12-07 → 2026-12-14 (+7d) |  |
| SDR-2-CON-SE-ZA-2030 | Backfilling of 200 mm GRP Pipe. | 2026-11-14 → 2026-11-21 (+7d) | 2026-12-07 → 2026-12-14 (+7d) | 116d → 110d |
| 4 | **Manholes** |  | 2026-11-30 → 2026-12-07 (+7d) |  |
| 4 | **Testing** | 2026-10-19 → 2026-10-26 (+7d) | 2026-11-11 → 2026-11-18 (+7d) |  |
| SDR-2-CON-SE-ZA-2010 | Testing | 2026-10-19 → 2026-10-26 (+7d) | 2026-11-11 → 2026-11-18 (+7d) | 114d → 108d |
| 5 | **Backfilling** | 2026-11-12 → 2026-11-19 (+7d) | 2026-11-30 → 2026-12-07 (+7d) |  |
| SDR-2-CON-SE-ZA-2040 | Backfilling | 2026-11-12 → 2026-11-19 (+7d) | 2026-11-30 → 2026-12-07 (+7d) | 114d → 108d |
| ZG | **ZONE G** |  | 2027-01-17 → 2027-01-24 (+7d) |  |
| 3 | **LINE 49 AND LINE 51 ( PH2-G-MCE0 )** |  | 2026-10-28 → 2026-11-04 (+7d) |  |
| 4 | **Manholes** |  | 2026-10-28 → 2026-11-04 (+7d) |  |
| 4 | **Testing** |  | 2026-10-28 → 2026-11-04 (+7d) |  |
| SDR-2-CON-SE-ZA-2110 | Testing |  | 2026-10-28 → 2026-11-04 (+7d) | 141d → 135d |
| 4 | **LINE 50 ( PH2-G-MCD0 )** |  | 2027-01-17 → 2027-01-24 (+7d) |  |
| 7 | **Pipes Work** |  | 2027-01-17 → 2027-01-24 (+7d) |  |
| 3 | **Testing** |  | 2027-01-17 → 2027-01-24 (+7d) |  |

| ID | Task | Start | Finish | Complete | Total float | Predecessors | Other |
| --- | --- | --- | --- | --- | --- | --- | --- |
| SDR-2-CON-SE-ZA-2180 | Testing of 200 mm GRP Pipe. |  | 2027-01-17 → 2027-01-24 (+7d) |  | 72d → 66d |  |  |
| 4 | **Manholes** |  | 2026-10-28 → 2026-11-04 (+7d) |  |  |  |  |
| 4 | **Testing** |  | 2026-10-28 → 2026-11-04 (+7d) |  |  |  |  |
| SDR-2-CON-SE-ZA-2210 | Testing |  | 2026-10-28 → 2026-11-04 (+7d) |  | 135d → 130d |  |  |
| 5 | **LINE 52 AND LINE 53 ( PH2-G-MCF0 )** |  | 2026-10-28 → 2026-11-04 (+7d) |  |  |  |  |
| 4 | **Manholes** |  | 2026-10-28 → 2026-11-04 (+7d) |  |  |  |  |
| 4 | **Testing** |  | 2026-10-28 → 2026-11-04 (+7d) |  |  |  |  |
| SDR-2-CON-SE-ZA-2310 | Testing |  | 2026-10-28 → 2026-11-04 (+7d) |  | 134d → 128d |  |  |
| 6 | **LINE 54 AND LINE 55 ( PH2-G-MCG0 )** |  | 2026-10-28 → 2026-11-04 (+7d) |  |  |  |  |
| 4 | **Manholes** |  | 2026-10-28 → 2026-11-04 (+7d) |  |  |  |  |
| 4 | **Testing** |  | 2026-10-28 → 2026-11-04 (+7d) |  |  |  |  |
| SDR-2-CON-SE-ZA-2410 | Testing |  | 2026-10-28 → 2026-11-04 (+7d) |  | 147d → 141d |  |  |
| TSE | **TSE Network** |  | 2027-06-10 → 2027-06-17 (+7d) |  |  |  |  |
| ZA | **ZONE A** |  | 2027-05-03 → 2027-05-10 (+7d) |  |  |  |  |
| 1 | **TSE NETWORK IN ( PH2-COL-MC10 )** |  | 2027-04-26 → 2027-05-03 (+7d) |  |  |  |  |
| 6 | **Pipes Work** |  | 2027-04-26 → 2027-05-03 (+7d) |  |  |  |  |
| 1 | **Excavation** |  | 2026-12-27 → 2026-12-06 (-21d) |  |  |  |  |
| SDR-2-CON-TS-ZA-3200 | Excavation for TSE HDPE Pipes 225 mm Section 1 |  | 2026-11-22 → 2026-11-29 (+7d) |  | 22d → 16d |  |  |
| SDR-2-CON-TS-ZA-1000 | Excavation for TSE HDPE Pipes 225 mm Section 2 | 2026-12-05 → 2026-11-14 (-21d) | 2026-12-27 → 2026-12-06 (-21d) |  | 0d → 22d | SDR-2-CON-RW-ZG-2300, SDR-2-CON-TS-ZA-3200 FF, SDR-2-CON-CC-ZG-1650 FF, SDR-2-CON-RW-ZG-1110 FF → SDR-2-CON-RW-ZG-2300, SDR-2-CON-TS-ZA-3200 FF, SDR-2-CON-CC-ZG-1650 FF |  |
| 6 | **bedding Works** | 2026-12-28 → 2026-12-07 (-21d) | 2027-01-20 → 2026-12-30 (-21d) |  |  |  |  |
| SDR-2-CON-TS-ZA-1900 | Sand bedding for TSE HDPE Pipes 225 mm | 2026-12-28 → 2026-12-07 (-21d) | 2027-01-20 → 2026-12-30 (-21d) |  | 31d → 49d |  |  |
| 2 | **Pipes Laying** | 2027-02-15 → 2027-02-23 (+8d) | 2027-03-16 → 2027-03-23 (+7d) |  |  |  |  |
| SDR-2-CON-TS-ZA-1010 | Install TSE 225 mm HDPE Pipe | 2027-02-15 → 2027-02-23 (+8d) | 2027-03-16 → 2027-03-23 (+7d) |  | 10d → 4d |  |  |
| 5 | **Testing** | 2027-03-17 → 2027-03-24 (+7d) | 2027-04-01 → 2027-04-08 (+7d) |  |  |  |  |
| SDR-2-CON-TS-ZA-1080 | Testing of TSE HDPE Pipe 225 mm. | 2027-03-17 → 2027-03-24 (+7d) | 2027-04-01 → 2027-04-08 (+7d) |  | 10d → 4d |  |  |
| 7 | **Backfilling** | 2027-04-03 → 2027-04-10 (+7d) | 2027-04-26 → 2027-05-03 (+7d) |  |  |  |  |
| SDR-2-CON-TS-ZA-1910 | Backfilling of TSE HDPE Pipe 225 mm. | 2027-04-03 → 2027-04-10 (+7d) | 2027-04-26 → 2027-05-03 (+7d) |  | 10d → 4d |  |  |
| 3 | **Valve Chambers & Valves** | 2026-11-30 → 2026-12-07 (+7d) | 2027-04-20 → 2027-04-27 (+7d) |  |  |  |  |
| 3 | **Excavation** | 2026-11-30 → 2026-12-07 (+7d) | 2027-01-14 → 2027-01-21 (+7d) |  |  |  |  |
| SDR-2-CON-TS-ZA-3210 | Excavation for Valve Chambers Section 1 | 2026-11-30 → 2026-12-07 (+7d) | 2026-12-22 → 2026-12-29 (+7d) |  | 15d → 9d |  |  |
| SDR-2-CON-TS-ZA-1040 | Excavation for Valve Chambers Section 2 | 2026-12-23 → 2026-12-30 (+7d) | 2027-01-14 → 2027-01-21 (+7d) |  | 15d → 9d |  |  |
| 1 | **bedding Works** | 2027-01-16 → 2027-01-23 (+7d) | 2027-02-08 → 2027-02-15 (+7d) |  |  |  |  |
| SDR-2-CON-TS-ZA-1020 | Sand bedding for Valve Chambers | 2027-01-16 → 2027-01-23 (+7d) | 2027-02-08 → 2027-02-15 (+7d) |  | 15d → 9d |  |  |
| 4 | **Install Chambers & Valves** | 2027-02-09 → 2027-02-16 (+7d) | 2027-03-06 → 2027-03-17 (+11d) |  |  |  |  |
| SDR-2-CON-TS-ZA-1050 | Valve Chambers & Valves Installation | 2027-02-09 → 2027-02-16 (+7d) | 2027-03-06 → 2027-03-17 (+11d) |  | 15d → 9d |  |  |
| 5 | **Testing** | 2027-03-07 → 2027-03-18 (+11d) | 2027-03-27 → 2027-04-03 (+7d) |  |  |  |  |
| SDR-2-CON-TS-ZA-1060 | Testing Chambers & Valves Installation | 2027-03-07 → 2027-03-18 (+11d) | 2027-03-27 → 2027-04-03 (+7d) |  | 15d → 9d |  |  |
| 6 | **Backfilling** | 2027-03-28 → 2027-04-04 (+7d) | 2027-04-20 → 2027-04-27 (+7d) |  |  |  |  |
| SDR-2-CON-TS-ZA-1070 | Backfilling Chambers & Valves Installation | 2027-03-28 → 2027-04-04 (+7d) | 2027-04-20 → 2027-04-27 (+7d) |  | 15d → 9d |  |  |
| 2 | **TSE NETWORK IN ( PH2-COL-MC20 )** |  | 2027-04-22 → 2027-04-29 (+7d) |  |  |  |  |
| 6 | **Pipes Work** |  | 2027-04-18 → 2027-04-25 (+7d) |  |  |  |  |
| 1 | **Excavation** |  | 2027-01-20 → 2027-01-27 (+7d) |  |  |  |  |
| SDR-2-CON-TS-ZA-3220 | Excavation for TSE HDPE Pipes 225 mm Section 1 |  | 2026-12-28 → 2027-01-04 (+7d) |  | 17d → 11d |  |  |
| SDR-2-CON-TS-ZA-2200 | Excavation for TSE HDPE Pipes 225 mm Section 2 | 2026-12-29 → 2027-01-05 (+7d) | 2027-01-20 → 2027-01-27 (+7d) |  | 17d → 11d |  |  |
| 6 | **bedding Works** | 2027-01-21 → 2027-01-28 (+7d) | 2027-02-14 → 2027-02-21 (+7d) |  |  |  |  |
| SDR-2-CON-TS-ZA-2280 | Sand bedding for TSE HDPE Pipes 225 mm | 2027-01-21 → 2027-01-28 (+7d) | 2027-02-14 → 2027-02-21 (+7d) |  | 17d → 11d |  |  |
| 2 | **Pipes Laying** |  | 2027-03-16 → 2027-03-23 (+7d) |  |  |  |  |
| SDR-2-CON-TS-ZA-2210 | Install TSE 225 mm HDPE Pipe |  | 2027-03-16 → 2027-03-23 (+7d) |  | 17d → 11d |  |  |
| 5 | **Testing** | 2027-03-17 → 2027-03-24 (+7d) | 2027-03-28 → 2027-04-04 (+7d) |  |  |  |  |
| SDR-2-CON-TS-ZA-2270 | Testing of TSE HDPE Pipe 225 mm. | 2027-03-17 → 2027-03-24 (+7d) | 2027-03-28 → 2027-04-04 (+7d) |  | 17d → 11d |  |  |
| 7 | **Backfilling** | 2027-03-29 → 2027-04-05 (+7d) | 2027-04-18 → 2027-04-25 (+7d) |  |  |  |  |
| SDR-2-CON-TS-ZA-2290 | Backfilling of TSE HDPE Pipe 225 mm. | 2027-03-29 → 2027-04-05 (+7d) | 2027-04-18 → 2027-04-25 (+7d) |  | 17d → 11d |  |  |
| 3 | **Valve Chambers & Valves** | 2026-12-06 → 2026-12-13 (+7d) | 2027-04-22 → 2027-04-29 (+7d) |  |  |  |  |
| 3 | **Excavation** | 2026-12-06 → 2026-12-13 (+7d) | 2027-01-20 → 2027-01-27 (+7d) |  |  |  |  |
| SDR-2-CON-TS-ZA-3230 | Excavation for Valve Chambers Section 1 | 2026-12-06 → 2026-12-13 (+7d) | 2026-12-28 → 2027-01-04 (+7d) |  | 17d → 11d |  |  |
| SDR-2-CON-TS-ZA-2230 | Excavation for Valve Chambers Section 2 | 2026-12-29 → 2027-01-05 (+7d) | 2027-01-20 → 2027-01-27 (+7d) |  | 17d → 11d |  |  |
| 1 | **bedding Works** | 2027-01-26 → 2027-02-02 (+7d) | 2027-02-18 → 2027-02-27 (+9d) |  |  |  |  |
| SDR-2-CON-TS-ZA-2220 | Sand bedding for Valve Chambers | 2027-01-26 → 2027-02-02 (+7d) | 2027-02-18 → 2027-02-27 (+9d) |  | 13d → 7d |  |  |
| 4 | **Install Chambers & Valves** | 2027-02-20 → 2027-02-28 (+8d) | 2027-03-21 → 2027-03-28 (+7d) |  |  |  |  |
| SDR-2-CON-TS-ZA-2240 | Valve Chambers & Valves Installation | 2027-02-20 → 2027-02-28 (+8d) | 2027-03-21 → 2027-03-28 (+7d) |  | 13d → 7d |  |  |
| 5 | **Testing** | 2027-03-22 → 2027-03-29 (+7d) | 2027-04-01 → 2027-04-08 (+7d) |  |  |  |  |
| SDR-2-CON-TS-ZA-2250 | Testing Chambers & Valves Installation | 2027-03-22 → 2027-03-29 (+7d) | 2027-04-01 → 2027-04-08 (+7d) |  | 13d → 7d |  |  |
| 6 | **Backfilling** | 2027-04-03 → 2027-04-10 (+7d) | 2027-04-22 → 2027-04-29 (+7d) |  |  |  |  |
| SDR-2-CON-TS-ZA-2260 | Backfilling Chambers & Valves Installation | 2027-04-03 → 2027-04-10 (+7d) | 2027-04-22 → 2027-04-29 (+7d) |  | 13d → 7d |  |  |
| 3 | **TSE NETWORK IN ( PH2-A-MCC0 )** |  | 2027-04-27 → 2027-05-04 (+7d) |  |  |  |  |
| 6 | **Pipes Work** |  | 2027-02-16 → 2027-01-30 (-17d) |  |  |  |  |
| 1 | **Excavation** |  | 2026-12-02 → 2026-10-26 (-37d) |  |  |  |  |
| SDR-2-CON-TS-ZA-1180 | Excavation for TSE HDPE Pipes 125 mm Section 1 |  |  |  |  | SDR-2-CON-SE-ZA-1460 FS+1d → SDR-2-CON-TS-ZA-3240 FS+3d, SDR-2-CON-RW-ZG-1060 | resources SIC- Cost [31428.1]; Plumbing Helper [81.48 h]; Labor [51.21 h]; Plumber [81.48 h]; Excavator [14.27 h]; Excavator Operator [81.48 h] → SIC- Cost [31428.1]; Plumbing Helper [81.48 h]; Labor [51.21 h]; Plumber [81.48 h]; Excavator [5 h]; Excavator Operator [81.48 h] |
| SDR-2-CON-TS-ZA-3240 | Excavation for TSE HDPE Pipes 125 mm Section 2 | 2026-11-09 → 2026-10-04 A (-36d) | 2026-12-02 → 2026-10-26 (-37d) | 0% → 50% | 64d → 52.3d | SDR-2-CON-TS-ZA-1180 FS+3d, SDR-2-CON-RW-ZG-1060 → SDR-2-CON-SE-ZA-1460 FS+1d | resources SIC- Cost [31428.1]; Plumbing Helper [81.48 h]; Labor [51.21 h]; Plumber [81.48 h]; Excavator [5 h]; Excavator Operator [81.48 h] → SIC- Cost [31428.1]; Plumbing Helper [81.48 h]; Labor [51.21 h]; Plumber [81.48 h]; Excavator [14.27 h]; Excavator Operator [81.48 h] |
| 3 | **bedding Works** | 2026-12-03 → 2026-10-22 (-42d) | 2026-12-27 → 2026-12-09 (-18d) |  |  |  |  |

| ID | Task | Start | Finish | Duration | Complete | Total float | Predecessors | Other |
| --- | --- | --- | --- | --- | --- | --- | --- | --- |
| SDR-2-CON-TS-ZA-1920 | Sand bedding for TSE HDPE Pipes 125 mm | 2026-12-03 → 2026-10-22 A (-42d) | 2026-12-27 → 2026-12-09 (-18d) |  | 0% → 25% | 64d → 79d | SDR-2-CON-TS-ZA-3240 → SDR-2-CON-TS-ZA-1180 |  |
| 2 | **Pipes Laying** | 2026-12-28 → 2026-10-22 (-67d) | 2027-01-20 → 2027-01-03 (-17d) |  |  |  |  |  |
| SDR-2-CON-TS-ZA-1190 | Install TSE 125 mm HDPE Pipe | 2026-12-28 → 2026-10-22 A (-67d) | 2027-01-20 → 2027-01-03 (-17d) |  | 0% → 25% | 64d → 79d | SDR-2-CON-TS-ZA-3240, SDR-2-CON-TS-ZA-1920 → SDR-2-CON-TS-ZA-1180, SDR-2-CON-TS-ZA-1920 |  |
| 5 | **Testing** | 2027-01-21 → 2027-01-04 (-17d) | 2027-02-01 → 2027-01-14 (-18d) |  |  |  |  |  |
| SDR-2-CON-TS-ZA-1260 | Testing of TSE HDPE Pipe 125 mm. | 2027-01-21 → 2027-01-04 (-17d) | 2027-02-01 → 2027-01-14 (-18d) |  |  | 64d → 79d |  |  |
| 4 | **Backfilling** | 2027-02-02 → 2027-01-16 (-17d) | 2027-02-16 → 2027-01-30 (-17d) |  |  |  |  |  |
| SDR-2-CON-TS-ZA-1930 | Backfilling of TSE HDPE Pipe 125 mm. | 2027-02-02 → 2027-01-16 (-17d) | 2027-02-16 → 2027-01-30 (-17d) |  |  | 64d → 79d |  |  |
| 3 | **Valve Chambers & Valves** | 2026-10-19 → 2026-10-26 (+7d) | 2027-04-27 → 2027-05-04 (+7d) |  |  |  |  |  |
| 3 | **Excavation** | 2026-10-19 → 2026-10-26 (+7d) | 2026-12-02 → 2026-12-09 (+7d) |  |  |  |  |  |
| SDR-2-CON-TS-ZA-3250 | Excavation for Valve Chambers Section 1 | 2026-10-19 → 2026-10-26 (+7d) | 2026-11-11 → 2026-11-18 (+7d) |  |  | 58.3d → 52.3d | SDR-2-CON-TS-ZA-1180 SS → SDR-2-CON-TS-ZA-3240 SS |  |
| SDR-2-CON-TS-ZA-2010 | Excavation for Valve Chambers Section 2 | 2026-11-12 → 2026-11-19 (+7d) | 2026-12-02 → 2026-12-09 (+7d) |  |  | 58.3d → 52.3d |  |  |
| 1 | **bedding Works** | 2026-12-03 → 2026-12-10 (+7d) | 2026-12-27 → 2027-01-03 (+7d) |  |  |  |  |  |
| SDR-2-CON-TS-ZA-2000 | Sand bedding for Valve Chambers | 2026-12-03 → 2026-12-10 (+7d) | 2026-12-27 → 2027-01-03 (+7d) |  |  | 58.3d → 52.3d |  |  |
| 4 | **Install Chambers & Valves** | 2027-02-24 → 2027-03-03 (+7d) | 2027-03-24 → 2027-03-31 (+7d) |  |  |  |  |  |
| SDR-2-CON-TS-ZA-2020 | Valve Chambers & Valves Installation | 2027-02-24 → 2027-03-03 (+7d) | 2027-03-24 → 2027-03-31 (+7d) |  |  | 9.3d → 3.3d |  |  |
| 5 | **Testing** | 2027-03-25 → 2027-04-01 (+7d) | 2027-04-01 → 2027-04-08 (+7d) |  |  |  |  |  |
| SDR-2-CON-TS-ZA-2030 | Testing Chambers & Valves Installation | 2027-03-25 → 2027-04-01 (+7d) | 2027-04-01 → 2027-04-08 (+7d) |  |  | 9.3d → 3.3d |  |  |
| 6 | **Backfilling** | 2027-04-03 → 2027-04-10 (+7d) | 2027-04-27 → 2027-05-04 (+7d) |  |  |  |  |  |
| SDR-2-CON-TS-ZA-2040 | Backfilling Chambers & Valves Installation | 2027-04-03 → 2027-04-10 (+7d) | 2027-04-27 → 2027-05-04 (+7d) |  |  | 9.3d → 3.3d |  |  |
| 4 | **TSE NETWORK IN ( PH2-A-MCD0 )** |  | 2027-05-02 → 2027-05-09 (+7d) |  |  |  |  |  |
| 6 | **Pipes Work** |  | 2027-05-01 → 2027-05-08 (+7d) |  |  |  |  |  |
| 1 | **Excavation** |  | 2026-11-09 → 2026-10-26 (-14d) |  |  |  |  |  |
| SDR-2-CON-TS-ZA-1270 | Excavation for TSE HDPE Pipes 90 mm Section 1 |  | 2026-09-14 A → 2026-10-01 A (+17d) | 20d → 19d |  |  | SDR-2-CON-SE-ZA-1560 → SDR-2-CON-TS-ZA-3260 | resources SIC- Cost; Plumbing Helper [81.48 h]; Labor [51.21 h]; Plumber [81.48 h]; Excavator [16.05 h]; Excavator Operator [81.48 h] → SIC- Cost; Plumbing Helper [81.48 h]; Labor [51.21 h]; Plumber [81.48 h]; Excavator [5 h]; Excavator Operator [81.48 h] |
| SDR-2-CON-TS-ZA-3260 | Excavation for TSE HDPE Pipes 90 mm Section 2 | 2026-09-24 A → 2026-10-04 A (+10d) | 2026-11-09 → 2026-10-26 (-14d) | 19d → 20d | 25% → 50% | 78d → 67d | SDR-2-CON-TS-ZA-1270 → SDR-2-CON-SE-ZA-1560 | resources SIC- Cost; Plumbing Helper [81.48 h]; Labor [51.21 h]; Plumber [81.48 h]; Excavator [5 h]; Excavator Operator [81.48 h] → SIC- Cost; Plumbing Helper [81.48 h]; Labor [51.21 h]; Plumber [81.48 h]; Excavator [16.05 h]; Excavator Operator [81.48 h] |
| 3 | **bedding Works** | 2026-09-24 → 2026-10-22 (+28d) | 2026-11-30 → 2026-11-15 (-15d) |  |  |  |  |  |
| SDR-2-CON-TS-ZA-1940 | Sand bedding for TSE HDPE Pipes 90 mm | 2026-09-24 A → 2026-10-22 A (+28d) | 2026-11-30 → 2026-11-15 (-15d) |  | 25% → 30% | 78d → 91d | SDR-2-CON-TS-ZA-3260 → SDR-2-CON-TS-ZA-1270 |  |
| 2 | **Pipes Laying** | 2026-09-24 → 2026-10-22 (+28d) | 2027-03-24 → 2027-03-31 (+7d) |  |  |  |  |  |
| SDR-2-CON-TS-ZA-1280 | Install TSE 90 mm HDPE Pipe | 2026-09-24 A → 2026-10-22 A (+28d) | 2027-03-24 → 2027-03-31 (+7d) |  |  | 6d → 0d |  |  |
| 5 | **Testing** | 2027-03-25 → 2027-04-01 (+7d) | 2027-04-06 → 2027-04-13 (+7d) |  |  |  |  |  |
| SDR-2-CON-TS-ZA-1350 | Testing of TSE HDPE Pipe 90 mm. | 2027-03-25 → 2027-04-01 (+7d) | 2027-04-06 → 2027-04-13 (+7d) |  |  | 6d → 0d |  |  |
| 4 | **Backfilling** | 2027-04-07 → 2027-04-14 (+7d) | 2027-05-01 → 2027-05-08 (+7d) |  |  |  |  |  |
| SDR-2-CON-TS-ZA-1950 | Backfilling of TSE HDPE Pipe 90 mm. | 2027-04-07 → 2027-04-14 (+7d) | 2027-05-01 → 2027-05-08 (+7d) |  |  | 6d → 0d |  |  |
| 3 | **Valve Chambers & Valves** | 2026-10-19 → 2026-10-26 (+7d) | 2027-05-02 → 2027-05-09 (+7d) |  |  |  |  |  |
| 3 | **Excavation** | 2026-10-19 → 2026-10-26 (+7d) | 2026-12-02 → 2026-12-09 (+7d) |  |  |  |  |  |
| SDR-2-CON-TS-ZA-3270 | Excavation for Valve Chambers Section 1 | 2026-10-19 → 2026-10-26 (+7d) | 2026-11-10 → 2026-11-17 (+7d) |  |  | 59d → 67d | SDR-2-CON-TS-ZA-1270 SS → SDR-2-CON-TS-ZA-3260 SS |  |
| SDR-2-CON-TS-ZA-2060 | Excavation for Valve Chambers Section 2 | 2026-11-11 → 2026-11-18 (+7d) | 2026-12-02 → 2026-12-09 (+7d) |  |  | 59d → 67d |  |  |
| 1 | **bedding Works** | 2026-12-03 → 2026-12-10 (+7d) | 2026-12-21 → 2026-12-28 (+7d) |  |  |  |  |  |
| SDR-2-CON-TS-ZA-2050 | Sand bedding for Valve Chambers | 2026-12-03 → 2026-12-10 (+7d) | 2026-12-21 → 2026-12-28 (+7d) |  |  | 59d → 67d |  |  |
| 4 | **Install Chambers & Valves** | 2027-02-24 → 2027-03-03 (+7d) | 2027-03-24 → 2027-03-31 (+7d) |  |  |  |  |  |
| SDR-2-CON-TS-ZA-2070 | Valve Chambers & Valves Installation | 2027-02-24 → 2027-03-03 (+7d) | 2027-03-24 → 2027-03-31 (+7d) |  |  | 5d → 13d |  |  |
| 5 | **Testing** | 2027-03-25 → 2027-04-01 (+7d) | 2027-04-10 → 2027-04-17 (+7d) |  |  |  |  |  |
| SDR-2-CON-TS-ZA-2080 | Testing Chambers & Valves Installation | 2027-03-25 → 2027-04-01 (+7d) | 2027-04-10 → 2027-04-17 (+7d) |  |  | 5d → 13d |  |  |
| 6 | **Backfilling** | 2027-04-11 → 2027-04-18 (+7d) | 2027-05-02 → 2027-05-09 (+7d) |  |  |  |  |  |
| SDR-2-CON-TS-ZA-2090 | Backfilling Chambers & Valves Installation | 2027-04-11 → 2027-04-18 (+7d) | 2027-05-02 → 2027-05-09 (+7d) |  |  | 5d → 13d |  |  |
| 5 | **TSE NETWORK IN ( PH2-A-MCE0 )** |  | 2027-05-03 → 2027-05-10 (+7d) |  |  |  |  |  |
| 6 | **Pipes Work** |  | 2027-05-03 → 2027-05-10 (+7d) |  |  |  |  |  |
| 3 | **bedding Works** |  | 2027-03-15 → 2027-03-22 (+7d) |  |  |  |  |  |
| SDR-2-CON-TS-ZA-2630 | Sand bedding for TSE HDPE Pipes 90 mm |  | 2027-03-15 → 2027-03-22 (+7d) |  |  | 36d → 30d |  |  |
| 2 | **Pipes Laying** |  | 2027-04-05 → 2027-04-12 (+7d) |  |  |  |  |  |
| SDR-2-CON-TS-ZA-2610 | Install TSE 90 mm HDPE Pipe |  | 2027-04-05 → 2027-04-12 (+7d) |  |  | 36d → 30d |  |  |
| 5 | **Testing** | 2027-04-06 → 2027-04-13 (+7d) | 2027-04-17 → 2027-04-24 (+7d) |  |  |  |  |  |
| SDR-2-CON-TS-ZA-2620 | Testing of TSE HDPE Pipe 90 mm. | 2027-04-06 → 2027-04-13 (+7d) | 2027-04-17 → 2027-04-24 (+7d) |  |  | 36d → 30d |  |  |
| 4 | **Backfilling** | 2027-04-11 → 2027-04-18 (+7d) | 2027-05-03 → 2027-05-10 (+7d) |  |  |  |  |  |
| SDR-2-CON-TS-ZA-2640 | Backfilling of TSE HDPE Pipe 90 mm. | 2027-04-11 → 2027-04-18 (+7d) | 2027-05-03 → 2027-05-10 (+7d) |  |  | 36d → 30d |  |  |
| 3 | **Valve Chambers & Valves** | 2026-10-19 → 2026-10-26 (+7d) | 2027-02-21 → 2027-03-01 (+8d) |  |  |  |  |  |
| 3 | **Excavation** | 2026-10-19 → 2026-10-26 (+7d) | 2026-12-03 → 2026-12-10 (+7d) |  |  |  |  |  |
| SDR-2-CON-TS-ZA-3290 | Excavation for Valve Chambers Section 1 | 2026-10-19 → 2026-10-26 (+7d) | 2026-11-11 → 2026-11-18 (+7d) |  |  | 60d → 54d |  |  |
| SDR-2-CON-TS-ZA-2660 | Excavation for Valve Chambers Section 2 | 2026-11-12 → 2026-11-19 (+7d) | 2026-12-03 → 2026-12-10 (+7d) |  |  | 60d → 54d |  |  |
| 1 | **bedding Works** | 2026-12-05 → 2026-12-12 (+7d) | 2026-12-27 → 2027-01-03 (+7d) |  |  |  |  |  |
| SDR-2-CON-TS-ZA-2650 | Sand bedding for Valve Chambers | 2026-12-05 → 2026-12-12 (+7d) | 2026-12-27 → 2027-01-03 (+7d) |  |  | 60d → 54d |  |  |
| 4 | **Install Chambers & Valves** | 2026-12-28 → 2027-01-04 (+7d) | 2027-01-20 → 2027-01-27 (+7d) |  |  |  |  |  |
| SDR-2-CON-TS-ZA-2670 | Valve Chambers & Valves Installation | 2026-12-28 → 2027-01-04 (+7d) | 2027-01-20 → 2027-01-27 (+7d) |  |  | 60d → 54d |  |  |
| 5 | **Testing** | 2027-01-21 → 2027-01-28 (+7d) | 2027-01-28 → 2027-02-04 (+7d) |  |  |  |  |  |
| SDR-2-CON-TS-ZA-2680 | Testing Chambers & Valves Installation | 2027-01-21 → 2027-01-28 (+7d) | 2027-01-28 → 2027-02-04 (+7d) |  |  | 60d → 54d |  |  |
| 6 | **Backfilling** | 2027-01-30 → 2027-02-06 (+7d) | 2027-02-21 → 2027-03-01 (+8d) |  |  |  |  |  |
| SDR-2-CON-TS-ZA-2690 | Backfilling Chambers & Valves Installation | 2027-01-30 → 2027-02-06 (+7d) | 2027-02-21 → 2027-03-01 (+8d) |  |  | 60d → 54d |  |  |
| 6 | **TSE NETWORK IN ( PH2-A-MCF0 )** |  | 2027-04-07 → 2027-04-14 (+7d) |  |  |  |  |  |
| 6 | **Pipes Work** |  | 2027-02-01 → 2027-02-08 (+7d) |  |  |  |  |  |
| 1 | **Excavation** |  | 2026-11-10 → 2026-11-17 (+7d) |  |  |  |  |  |
| SDR-2-CON-TS-ZA-2700 | Excavation for TSE HDPE Pipes 90 mm Section 2 |  | 2026-11-10 → 2026-11-17 (+7d) |  |  | 77d → 71d |  |  |

| ID | Task | Start | Finish | Total float |
| --- | --- | --- | --- | --- |
| 3 | **bedding Works** |  | 2026-12-03 → 2026-12-10 (+7d) |  |
| SDR-2-CON-TS-ZA-2730 | Sand bedding for TSE HDPE Pipes 90 mm |  | 2026-12-03 → 2026-12-10 (+7d) | 77d → 71d |
| 2 | **Pipes Laying** |  | 2026-12-26 → 2027-01-02 (+7d) |  |
| SDR-2-CON-TS-ZA-2710 | Install TSE 90 mm HDPE Pipe |  | 2026-12-26 → 2027-01-02 (+7d) | 77d → 71d |
| 5 | **Testing** | 2026-12-27 → 2027-01-03 (+7d) | 2027-01-07 → 2027-01-14 (+7d) |  |
| SDR-2-CON-TS-ZA-2720 | Testing of TSE HDPE Pipe 90 mm. | 2026-12-27 → 2027-01-03 (+7d) | 2027-01-07 → 2027-01-14 (+7d) | 77d → 71d |
| 4 | **Backfilling** | 2027-01-09 → 2027-01-16 (+7d) | 2027-02-01 → 2027-02-08 (+7d) |  |
| SDR-2-CON-TS-ZA-2740 | Backfilling of TSE HDPE Pipe 90 mm. | 2027-01-09 → 2027-01-16 (+7d) | 2027-02-01 → 2027-02-08 (+7d) | 77d → 71d |
| 3 | **Valve Chambers & Valves** | 2026-10-19 → 2026-10-26 (+7d) | 2027-04-07 → 2027-04-14 (+7d) |  |
| 3 | **Excavation** | 2026-10-19 → 2026-10-26 (+7d) | 2027-01-09 → 2027-01-16 (+7d) |  |
| SDR-2-CON-TS-ZA-3310 | Excavation for Valve Chambers Section 1 | 2026-10-19 → 2026-10-26 (+7d) | 2026-11-10 → 2026-11-17 (+7d) | 78d → 72d |
| SDR-2-CON-TS-ZA-2760 | Excavation for Valve Chambers Section 2 | 2026-12-17 → 2026-12-24 (+7d) | 2027-01-09 → 2027-01-16 (+7d) | 47d → 41d |
| 1 | **bedding Works** | 2027-01-10 → 2027-01-17 (+7d) | 2027-01-30 → 2027-02-06 (+7d) |  |
| SDR-2-CON-TS-ZA-2750 | Sand bedding for Valve Chambers | 2027-01-10 → 2027-01-17 (+7d) | 2027-01-30 → 2027-02-06 (+7d) | 47d → 41d |
| 4 | **Install Chambers & Valves** | 2027-01-31 → 2027-02-07 (+7d) | 2027-02-24 → 2027-03-03 (+7d) |  |
| SDR-2-CON-TS-ZA-2770 | Valve Chambers & Valves Installation | 2027-01-31 → 2027-02-07 (+7d) | 2027-02-24 → 2027-03-03 (+7d) | 47d → 41d |
| 5 | **Testing** | 2027-02-25 → 2027-03-04 (+7d) | 2027-03-14 → 2027-03-21 (+7d) |  |
| SDR-2-CON-TS-ZA-2780 | Testing Chambers & Valves Installation | 2027-02-25 → 2027-03-04 (+7d) | 2027-03-14 → 2027-03-21 (+7d) | 47d → 41d |
| 6 | **Backfilling** | 2027-03-15 → 2027-03-22 (+7d) | 2027-04-07 → 2027-04-14 (+7d) |  |
| SDR-2-CON-TS-ZA-2790 | Backfilling Chambers & Valves Installation | 2027-03-15 → 2027-03-22 (+7d) | 2027-04-07 → 2027-04-14 (+7d) | 58d → 52d |
| 7 | **TSE NETWORK IN ( PH2-A-MCG0 )** | 2026-10-19 → 2026-10-26 (+7d) | 2027-03-08 → 2027-03-20 (+12d) |  |
| 6 | **Pipes Work** | 2026-10-19 → 2026-10-26 (+7d) | 2027-02-25 → 2027-03-04 (+7d) |  |
| 1 | **Excavation** | 2026-10-19 → 2026-10-26 (+7d) | 2026-12-03 → 2026-12-10 (+7d) |  |
| SDR-2-CON-TS-ZA-3320 | Excavation for TSE HDPE Pipes 90 mm Section 1 | 2026-10-19 → 2026-10-26 (+7d) | 2026-11-10 → 2026-11-17 (+7d) | 31d → 25d |
| SDR-2-CON-TS-ZA-2800 | Excavation for TSE HDPE Pipes 90 mm Section 2 | 2026-11-11 → 2026-11-18 (+7d) | 2026-12-03 → 2026-12-10 (+7d) | 49d → 43d |
| 3 | **bedding Works** | 2026-12-05 → 2026-12-12 (+7d) | 2026-12-24 → 2026-12-31 (+7d) |  |
| SDR-2-CON-TS-ZA-2830 | Sand bedding for TSE HDPE Pipes 90 mm | 2026-12-05 → 2026-12-12 (+7d) | 2026-12-24 → 2026-12-31 (+7d) | 49d → 43d |
| 2 | **Pipes Laying** | 2026-12-26 → 2027-01-02 (+7d) | 2027-01-18 → 2027-01-25 (+7d) |  |
| SDR-2-CON-TS-ZA-2810 | Install TSE 90 mm HDPE Pipe | 2026-12-26 → 2027-01-02 (+7d) | 2027-01-18 → 2027-01-25 (+7d) | 49d → 43d |
| 5 | **Testing** | 2027-01-19 → 2027-01-26 (+7d) | 2027-02-02 → 2027-02-09 (+7d) |  |
| SDR-2-CON-TS-ZA-2820 | Testing of TSE HDPE Pipe 90 mm. | 2027-01-19 → 2027-01-26 (+7d) | 2027-02-02 → 2027-02-09 (+7d) | 49d → 43d |
| 4 | **Backfilling** | 2027-02-03 → 2027-02-10 (+7d) | 2027-02-25 → 2027-03-04 (+7d) |  |
| SDR-2-CON-TS-ZA-2840 | Backfilling of TSE HDPE Pipe 90 mm. | 2027-02-03 → 2027-02-10 (+7d) | 2027-02-25 → 2027-03-04 (+7d) | 49d → 43d |
| 3 | **Valve Chambers & Valves** | 2026-10-19 → 2026-10-26 (+7d) | 2027-03-08 → 2027-03-20 (+12d) |  |
| 3 | **Excavation** | 2026-10-19 → 2026-10-26 (+7d) | 2026-12-03 → 2026-12-10 (+7d) |  |
| SDR-2-CON-TS-ZA-3330 | Excavation for Valve Chambers Section 1 | 2026-10-19 → 2026-10-26 (+7d) | 2026-11-10 → 2026-11-17 (+7d) | 48d → 42d |
| SDR-2-CON-TS-ZA-2860 | Excavation for Valve Chambers Section 2 | 2026-11-11 → 2026-11-18 (+7d) | 2026-12-03 → 2026-12-10 (+7d) | 48d → 42d |
| 1 | **bedding Works** | 2026-12-05 → 2026-12-12 (+7d) | 2026-12-26 → 2027-01-02 (+7d) |  |
| SDR-2-CON-TS-ZA-2850 | Sand bedding for Valve Chambers | 2026-12-05 → 2026-12-12 (+7d) | 2026-12-26 → 2027-01-02 (+7d) | 48d → 42d |
| 4 | **Install Chambers & Valves** | 2026-12-27 → 2027-01-03 (+7d) | 2027-01-19 → 2027-01-26 (+7d) |  |
| SDR-2-CON-TS-ZA-2870 | Valve Chambers & Valves Installation | 2026-12-27 → 2027-01-03 (+7d) | 2027-01-19 → 2027-01-26 (+7d) | 48d → 42d |
| 5 | **Testing** | 2027-01-20 → 2027-01-27 (+7d) | 2027-02-11 → 2027-02-18 (+7d) |  |
| SDR-2-CON-TS-ZA-2880 | Testing Chambers & Valves Installation | 2027-01-20 → 2027-01-27 (+7d) | 2027-02-11 → 2027-02-18 (+7d) | 48d → 42d |
| 6 | **Backfilling** | 2027-02-13 → 2027-02-20 (+7d) | 2027-03-08 → 2027-03-20 (+12d) |  |
| SDR-2-CON-TS-ZA-2890 | Backfilling Chambers & Valves Installation | 2027-02-13 → 2027-02-20 (+7d) | 2027-03-08 → 2027-03-20 (+12d) | 48d → 42d |
| 8 | **TSE NETWORK IN ( PH2-A-MCH0 )** | 2026-10-19 → 2026-10-26 (+7d) | 2027-04-21 → 2027-04-28 (+7d) |  |
| 6 | **Pipes Work** | 2026-10-19 → 2026-10-26 (+7d) | 2027-04-15 → 2027-04-22 (+7d) |  |
| 1 | **Excavation** | 2026-10-19 → 2026-10-26 (+7d) | 2027-01-16 → 2027-01-23 (+7d) |  |
| SDR-2-CON-TS-ZA-3340 | Excavation for TSE HDPE Pipes 250 mm Section 1 | 2026-10-19 → 2026-10-26 (+7d) | 2026-11-10 → 2026-11-17 (+7d) | 51d → 45d |
| SDR-2-CON-TS-ZA-1630 | Excavation for TSE HDPE Pipes 250 mm Section 2 | 2026-12-24 → 2026-12-31 (+7d) | 2027-01-16 → 2027-01-23 (+7d) | 14d → 8d |
| 7 | **bedding Works** | 2027-01-17 → 2027-01-24 (+7d) | 2027-02-09 → 2027-02-16 (+7d) |  |
| SDR-2-CON-TS-ZA-1960 | Sand bedding for TSE HDPE Pipes 250 mm | 2027-01-17 → 2027-01-24 (+7d) | 2027-02-09 → 2027-02-16 (+7d) | 19d → 13d |
| 2 | **Pipes Laying** | 2027-02-10 → 2027-02-17 (+7d) | 2027-03-07 → 2027-03-18 (+11d) |  |
| SDR-2-CON-TS-ZA-1640 | Install TSE 250 mm HDPE Pipe | 2027-02-10 → 2027-02-17 (+7d) | 2027-03-07 → 2027-03-18 (+11d) | 19d → 13d |
| 5 | **Testing** | 2027-03-08 → 2027-03-20 (+12d) | 2027-03-30 → 2027-04-06 (+7d) |  |
| SDR-2-CON-TS-ZA-1710 | Testing of TSE HDPE Pipe 250 mm. | 2027-03-08 → 2027-03-20 (+12d) | 2027-03-30 → 2027-04-06 (+7d) | 19d → 13d |
| 8 | **Backfilling** | 2027-03-31 → 2027-04-07 (+7d) | 2027-04-15 → 2027-04-22 (+7d) |  |
| SDR-2-CON-TS-ZA-1970 | Backfilling of TSE HDPE Pipe 250 mm. | 2027-03-31 → 2027-04-07 (+7d) | 2027-04-15 → 2027-04-22 (+7d) | 19d → 13d |
| 3 | **Valve Chambers & Valves** | 2026-10-19 → 2026-10-26 (+7d) | 2027-04-21 → 2027-04-28 (+7d) |  |
| 3 | **Excavation** | 2026-10-19 → 2026-10-26 (+7d) | 2027-01-16 → 2027-01-23 (+7d) |  |
| SDR-2-CON-TS-ZA-3350 | Excavation for Valve Chambers Section 1 | 2026-10-19 → 2026-10-26 (+7d) | 2026-11-10 → 2026-11-17 (+7d) | 51d → 45d |
| SDR-2-CON-TS-ZA-2110 | Excavation for Valve Chambers Section 2 | 2026-12-24 → 2026-12-31 (+7d) | 2027-01-16 → 2027-01-23 (+7d) | 14d → 8d |
| 1 | **bedding Works** | 2027-01-17 → 2027-01-24 (+7d) | 2027-02-09 → 2027-02-16 (+7d) |  |
| SDR-2-CON-TS-ZA-2100 | Sand bedding for Valve Chambers | 2027-01-17 → 2027-01-24 (+7d) | 2027-02-09 → 2027-02-16 (+7d) | 14d → 8d |
| 4 | **Install Chambers & Valves** | 2027-02-10 → 2027-02-17 (+7d) | 2027-03-07 → 2027-03-18 (+11d) |  |
| SDR-2-CON-TS-ZA-2120 | Valve Chambers & Valves Installation | 2027-02-10 → 2027-02-17 (+7d) | 2027-03-07 → 2027-03-18 (+11d) | 14d → 8d |
| 5 | **Testing** | 2027-03-08 → 2027-03-20 (+12d) | 2027-03-29 → 2027-04-05 (+7d) |  |
| SDR-2-CON-TS-ZA-2130 | Testing Chambers & Valves Installation | 2027-03-08 → 2027-03-20 (+12d) | 2027-03-29 → 2027-04-05 (+7d) | 14d → 8d |
| 6 | **Backfilling** | 2027-03-30 → 2027-04-06 (+7d) | 2027-04-21 → 2027-04-28 (+7d) |  |
| SDR-2-CON-TS-ZA-2140 | Backfilling Chambers & Valves Installation | 2027-03-30 → 2027-04-06 (+7d) | 2027-04-21 → 2027-04-28 (+7d) | 14d → 8d |

| ID | Task | Start | Finish | Complete | Total float |
| --- | --- | --- | --- | --- | --- |
| 6 | **Pipes Work** |  | 2027-03-04 → 2027-03-16 (+12d) |  |  |
| 1 | **Excavation** |  | 2026-12-03 → 2026-12-10 (+7d) |  |  |
| SDR-2-CON-TS-ZA-1720 | Excavation for TSE HDPE Pipes 450 mm Section 2 |  | 2026-12-03 → 2026-12-10 (+7d) |  | 51d → 45d |
| 7 | **bedding Works** | 2026-12-05 → 2026-10-20 (-46d) | 2026-12-28 → 2027-01-04 (+7d) |  |  |
| SDR-2-CON-TS-ZA-1980 | Sand bedding for TSE HDPE Pipes 450 mm | 2026-12-05 → 2026-10-20 A (-46d) | 2026-12-28 → 2027-01-04 (+7d) | 0% → 10% | 51d → 45d |
| 2 | **Pipes Laying** | 2026-12-29 → 2026-10-22 (-68d) | 2027-01-21 → 2027-01-28 (+7d) |  |  |
| SDR-2-CON-TS-ZA-1730 | Install TSE 450 mm HDPE Pipe | 2026-12-29 → 2026-10-22 A (-68d) | 2027-01-21 → 2027-01-28 (+7d) | 0% → 10% | 51d → 45d |
| 5 | **Testing** | 2027-01-23 → 2027-01-30 (+7d) | 2027-02-08 → 2027-02-15 (+7d) |  |  |
| SDR-2-CON-TS-ZA-1800 | Testing of TSE HDPE Pipe 450 mm. | 2027-01-23 → 2027-01-30 (+7d) | 2027-02-08 → 2027-02-15 (+7d) |  | 51d → 45d |
| 8 | **Backfilling** | 2027-02-09 → 2027-02-16 (+7d) | 2027-03-04 → 2027-03-16 (+12d) |  |  |
| SDR-2-CON-TS-ZA-1990 | Backfilling of TSE HDPE Pipe 450 mm. | 2027-02-09 → 2027-02-16 (+7d) | 2027-03-04 → 2027-03-16 (+12d) |  | 51d → 45d |
| 3 | **Valve Chambers & Valves** | 2026-11-11 → 2026-11-18 (+7d) | 2027-04-01 → 2027-04-08 (+7d) |  |  |
| 3 | **Excavation** | 2026-11-11 → 2026-11-18 (+7d) | 2026-12-27 → 2027-01-03 (+7d) |  |  |
| SDR-2-CON-TS-ZA-3370 | Excavation for Valve Chambers Section 1 | 2026-11-11 → 2026-11-18 (+7d) | 2026-12-03 → 2026-12-10 (+7d) |  | 31d → 25d |
| SDR-2-CON-TS-ZA-2160 | Excavation for Valve Chambers Section 2 | 2026-12-05 → 2026-12-12 (+7d) | 2026-12-27 → 2027-01-03 (+7d) |  | 31d → 25d |
| 1 | **bedding Works** | 2026-12-28 → 2027-01-04 (+7d) | 2027-01-20 → 2027-01-27 (+7d) |  |  |
| SDR-2-CON-TS-ZA-2150 | Sand bedding for Valve Chambers | 2026-12-28 → 2027-01-04 (+7d) | 2027-01-20 → 2027-01-27 (+7d) |  | 31d → 25d |
| 4 | **Install Chambers & Valves** | 2027-01-21 → 2027-01-28 (+7d) | 2027-02-14 → 2027-02-21 (+7d) |  |  |
| SDR-2-CON-TS-ZA-2170 | Valve Chambers & Valves Installation | 2027-01-21 → 2027-01-28 (+7d) | 2027-02-14 → 2027-02-21 (+7d) |  | 31d → 25d |
| 5 | **Testing** | 2027-02-15 → 2027-02-23 (+8d) | 2027-03-04 → 2027-03-16 (+12d) |  |  |
| SDR-2-CON-TS-ZA-2180 | Testing Chambers & Valves Installation | 2027-02-15 → 2027-02-23 (+8d) | 2027-03-04 → 2027-03-16 (+12d) |  | 31d → 25d |
| 6 | **Backfilling** | 2027-03-06 → 2027-03-17 (+11d) | 2027-04-01 → 2027-04-08 (+7d) |  |  |
| SDR-2-CON-TS-ZA-2190 | Backfilling Chambers & Valves Installation | 2027-03-06 → 2027-03-17 (+11d) | 2027-04-01 → 2027-04-08 (+7d) |  | 31d → 25d |
| 10 | **TSE NETWORK IN ( PH2-ART-MC10 )** |  | 2027-03-22 → 2027-03-29 (+7d) |  |  |
| 6 | **Pipes Work** |  | 2026-12-21 → 2026-12-28 (+7d) |  |  |
| 7 | **bedding Works** |  | 2026-12-21 → 2026-12-28 (+7d) |  |  |
| SDR-2-CON-TS-ZA-3130 | Sand bedding for TSE HDPE Pipes 450 mm |  | 2026-12-21 → 2026-12-28 (+7d) |  | 113d → 107d |
| 2 | **Pipes Laying** |  | 2026-12-21 → 2026-12-28 (+7d) |  |  |
| SDR-2-CON-TS-ZA-3110 | Install TSE 450 mm HDPE Pipe |  | 2026-12-21 → 2026-12-28 (+7d) |  | 113d → 107d |
| 5 | **Testing** |  | 2026-12-21 → 2026-12-28 (+7d) |  |  |
| SDR-2-CON-TS-ZA-3120 | Testing of TSE HDPE Pipe 450 mm. |  | 2026-12-21 → 2026-12-28 (+7d) |  | 113d → 107d |
| 8 | **Backfilling** |  | 2026-12-21 → 2026-12-28 (+7d) |  |  |
| SDR-2-CON-TS-ZA-3140 | Backfilling of TSE HDPE Pipe 450 mm. |  | 2026-12-21 → 2026-12-28 (+7d) |  | 113d → 107d |
| 3 | **Valve Chambers & Valves** | 2026-11-11 → 2026-11-18 (+7d) | 2027-03-22 → 2027-03-29 (+7d) |  |  |
| 3 | **Excavation** | 2026-11-11 → 2026-11-18 (+7d) | 2026-12-26 → 2027-01-02 (+7d) |  |  |
| SDR-2-CON-TS-ZA-3390 | Excavation for Valve Chambers Section 1 | 2026-11-11 → 2026-11-18 (+7d) | 2026-12-03 → 2026-12-10 (+7d) |  | 40d → 34d |
| SDR-2-CON-TS-ZA-3160 | Excavation for Valve Chambers Section 2 | 2026-12-05 → 2026-12-12 (+7d) | 2026-12-26 → 2027-01-02 (+7d) |  | 40d → 34d |
| 1 | **bedding Works** | 2026-12-27 → 2027-01-03 (+7d) | 2027-01-16 → 2027-01-23 (+7d) |  |  |
| SDR-2-CON-TS-ZA-3150 | Sand bedding for Valve Chambers | 2026-12-27 → 2027-01-03 (+7d) | 2027-01-16 → 2027-01-23 (+7d) |  | 40d → 34d |
| 4 | **Install Chambers & Valves** | 2027-01-17 → 2027-01-24 (+7d) | 2027-02-09 → 2027-02-16 (+7d) |  |  |
| SDR-2-CON-TS-ZA-3170 | Valve Chambers & Valves Installation | 2027-01-17 → 2027-01-24 (+7d) | 2027-02-09 → 2027-02-16 (+7d) |  | 40d → 34d |
| 5 | **Testing** | 2027-02-10 → 2027-02-17 (+7d) | 2027-02-21 → 2027-03-01 (+8d) |  |  |
| SDR-2-CON-TS-ZA-3180 | Testing Chambers & Valves Installation | 2027-02-10 → 2027-02-17 (+7d) | 2027-02-21 → 2027-03-01 (+8d) |  | 40d → 34d |
| 6 | **Backfilling** | 2027-02-23 → 2027-03-02 (+7d) | 2027-03-22 → 2027-03-29 (+7d) |  |  |
| SDR-2-CON-TS-ZA-3190 | Backfilling Chambers & Valves Installation | 2027-02-23 → 2027-03-02 (+7d) | 2027-03-22 → 2027-03-29 (+7d) |  | 40d → 34d |
| ZG | **ZONE G** |  | 2027-06-10 → 2027-06-17 (+7d) |  |  |
| 1 | **TSE NETWORK IN ( PH2-G-MCA0 )** |  | 2027-03-03 → 2027-03-15 (+12d) |  |  |
| 6 | **Pipes Work** |  | 2026-11-26 → 2026-12-03 (+7d) |  |  |
| 1 | **Excavation** |  | 2026-10-19 → 2026-10-26 (+7d) |  |  |
| SDR-2-CON-TS-ZA-2300 | Excavation for TSE HDPE Pipes 225 mm Section 2 |  | 2026-10-19 → 2026-10-26 (+7d) |  | 72d → 66d |
| SDR-2-CON-TS-ZA-3400 | Excavation for TSE HDPE Pipes 225 mm Section 1 |  | 2026-10-19 → 2026-10-26 (+7d) |  | 52d → 46d |
| 6 | **bedding Works** |  | 2026-10-19 → 2026-10-26 (+7d) |  |  |
| SDR-2-CON-TS-ZA-2380 | Sand bedding for TSE HDPE Pipes 225 mm |  | 2026-10-19 → 2026-10-26 (+7d) |  | 134d → 128d |
| 2 | **Pipes Laying** |  | 2026-10-19 → 2026-10-26 (+7d) |  |  |
| SDR-2-CON-TS-ZA-2310 | Install TSE 225 mm HDPE Pipe |  | 2026-10-19 → 2026-10-26 (+7d) |  | 134d → 128d |
| 5 | **Testing** | 2026-10-20 → 2026-10-27 (+7d) | 2026-11-03 → 2026-11-10 (+7d) |  |  |
| SDR-2-CON-TS-ZA-2370 | Testing of TSE HDPE Pipe 225 mm. | 2026-10-20 → 2026-10-27 (+7d) | 2026-11-03 → 2026-11-10 (+7d) |  | 134d → 128d |
| 7 | **Backfilling** | 2026-11-04 → 2026-11-11 (+7d) | 2026-11-26 → 2026-12-03 (+7d) |  |  |
| SDR-2-CON-TS-ZA-2390 | Backfilling of TSE HDPE Pipe 225 mm. | 2026-11-04 → 2026-11-11 (+7d) | 2026-11-26 → 2026-12-03 (+7d) |  | 134d → 128d |
| 3 | **Valve Chambers & Valves** | 2026-10-19 → 2026-10-26 (+7d) | 2027-03-03 → 2027-03-15 (+12d) |  |  |
| 3 | **Excavation** | 2026-10-19 → 2026-10-26 (+7d) | 2026-12-03 → 2026-12-10 (+7d) |  |  |
| SDR-2-CON-TS-ZA-3410 | Excavation for Valve Chambers Section 1 | 2026-10-19 → 2026-10-26 (+7d) | 2026-11-10 → 2026-11-17 (+7d) |  | 52d → 46d |
| SDR-2-CON-TS-ZA-2330 | Excavation for Valve Chambers Section 2 | 2026-11-11 → 2026-11-18 (+7d) | 2026-12-03 → 2026-12-10 (+7d) |  | 52d → 46d |
| 1 | **bedding Works** | 2026-12-05 → 2026-12-12 (+7d) | 2026-12-28 → 2027-01-04 (+7d) |  |  |
| SDR-2-CON-TS-ZA-2320 | Sand bedding for Valve Chambers | 2026-12-05 → 2026-12-12 (+7d) | 2026-12-28 → 2027-01-04 (+7d) |  | 52d → 46d |
| 4 | **Install Chambers & Valves** | 2026-12-29 → 2027-01-05 (+7d) | 2027-01-21 → 2027-01-28 (+7d) |  |  |
| SDR-2-CON-TS-ZA-2340 | Valve Chambers & Valves Installation | 2026-12-29 → 2027-01-05 (+7d) | 2027-01-21 → 2027-01-28 (+7d) |  | 52d → 46d |
| 5 | **Testing** | 2027-01-23 → 2027-01-30 (+7d) | 2027-02-06 → 2027-02-13 (+7d) |  |  |
| SDR-2-CON-TS-ZA-2350 | Testing Chambers & Valves Installation | 2027-01-23 → 2027-01-30 (+7d) | 2027-02-06 → 2027-02-13 (+7d) |  | 52d → 46d |
| 6 | **Backfilling** | 2027-02-08 → 2027-02-15 (+7d) | 2027-03-03 → 2027-03-15 (+12d) |  |  |

| ID | Task | Start | Finish | Total float |
| --- | --- | --- | --- | --- |
| SDR-2-CON-TS-ZA-2360 | Backfilling Chambers & Valves Installation | 2027-02-08 → 2027-02-15 (+7d) | 2027-03-03 → 2027-03-15 (+12d) | 52d → 46d |
| 2 | **TSE NETWORK IN ( PH2-G-MCE0 )** |  | 2027-05-11 → 2027-05-24 (+13d) |  |
| 6 | **Pipes Work** |  | 2027-01-12 → 2027-01-19 (+7d) |  |
| 1 | **Excavation** |  | 2026-10-19 → 2026-10-26 (+7d) |  |
| SDR-2-CON-TS-ZA-2400 | Excavation for TSE HDPE Pipes 125 mm Section 2 |  | 2026-10-19 → 2026-10-26 (+7d) | 81d → 75d |
| SDR-2-CON-TS-ZA-3420 | Excavation for TSE HDPE Pipes 125 mm Section 1 |  | 2026-10-19 → 2026-10-26 (+7d) | 81d → 75d |
| 3 | **bedding Works** | 2026-10-20 → 2026-10-27 (+7d) | 2026-11-12 → 2026-11-19 (+7d) |  |
| SDR-2-CON-TS-ZA-2430 | Sand bedding for TSE HDPE Pipes 125 mm | 2026-10-20 → 2026-10-27 (+7d) | 2026-11-12 → 2026-11-19 (+7d) | 94d → 88d |
| 2 | **Pipes Laying** | 2026-11-14 → 2026-11-21 (+7d) | 2026-12-07 → 2026-12-14 (+7d) |  |
| SDR-2-CON-TS-ZA-2410 | Install TSE 125 mm HDPE Pipe | 2026-11-14 → 2026-11-21 (+7d) | 2026-12-07 → 2026-12-14 (+7d) | 94d → 88d |
| 5 | **Testing** | 2026-12-08 → 2026-12-15 (+7d) | 2026-12-19 → 2026-12-26 (+7d) |  |
| SDR-2-CON-TS-ZA-2420 | Testing of TSE HDPE Pipe 125 mm. | 2026-12-08 → 2026-12-15 (+7d) | 2026-12-19 → 2026-12-26 (+7d) | 94d → 88d |
| 4 | **Backfilling** | 2026-12-20 → 2026-12-27 (+7d) | 2027-01-12 → 2027-01-19 (+7d) |  |
| SDR-2-CON-TS-ZA-2440 | Backfilling of TSE HDPE Pipe 125 mm. | 2026-12-20 → 2026-12-27 (+7d) | 2027-01-12 → 2027-01-19 (+7d) | 94d → 88d |
| 3 | **Valve Chambers & Valves** | 2026-10-20 → 2026-10-27 (+7d) | 2027-05-11 → 2027-05-24 (+13d) |  |
| 3 | **Excavation** | 2026-10-20 → 2026-10-27 (+7d) | 2026-12-07 → 2026-12-14 (+7d) |  |
| SDR-2-CON-TS-ZA-3430 | Excavation for Valve Chambers Section 1 | 2026-10-20 → 2026-10-27 (+7d) | 2026-11-12 → 2026-11-19 (+7d) | 66d → 60d |
| SDR-2-CON-TS-ZA-2460 | Excavation for Valve Chambers Section 2 | 2026-11-14 → 2026-11-21 (+7d) | 2026-12-07 → 2026-12-14 (+7d) | 66d → 60d |
| 1 | **bedding Works** | 2026-12-08 → 2026-12-15 (+7d) | 2026-12-31 → 2027-01-07 (+7d) |  |
| SDR-2-CON-TS-ZA-2450 | Sand bedding for Valve Chambers | 2026-12-08 → 2026-12-15 (+7d) | 2026-12-31 → 2027-01-07 (+7d) | 66d → 60d |
| 4 | **Install Chambers & Valves** | 2027-03-08 → 2027-03-20 (+12d) | 2027-04-05 → 2027-04-12 (+7d) |  |
| SDR-2-CON-TS-ZA-2470 | Valve Chambers & Valves Installation | 2027-03-08 → 2027-03-20 (+12d) | 2027-04-05 → 2027-04-12 (+7d) | 11d → 5d |
| 5 | **Testing** | 2027-04-06 → 2027-04-13 (+7d) | 2027-04-15 → 2027-04-22 (+7d) |  |
| SDR-2-CON-TS-ZA-2480 | Testing Chambers & Valves Installation | 2027-04-06 → 2027-04-13 (+7d) | 2027-04-15 → 2027-04-22 (+7d) | 11d → 5d |
| 6 | **Backfilling** | 2027-04-18 → 2027-04-25 (+7d) | 2027-05-11 → 2027-05-24 (+13d) |  |
| SDR-2-CON-TS-ZA-2490 | Backfilling Chambers & Valves Installation | 2027-04-18 → 2027-04-25 (+7d) | 2027-05-11 → 2027-05-24 (+13d) | 11d → 5d |
| 3 | **TSE NETWORK IN ( PH2-G-MCF0 )** |  | 2027-05-05 → 2027-05-12 (+7d) |  |
| 6 | **Pipes Work** |  | 2027-04-28 → 2027-05-05 (+7d) |  |
| 1 | **Excavation** |  | 2026-12-21 → 2026-12-28 (+7d) |  |
| SDR-2-CON-TS-ZA-2900 | Excavation for TSE HDPE Pipes 90 mm Section 2 |  | 2026-12-21 → 2026-12-28 (+7d) | 9d → 3d |
| SDR-2-CON-TS-ZA-3440 | Excavation for TSE HDPE Pipes 90 mm Section 1 |  | 2026-10-19 → 2026-10-26 (+7d) | 47d → 55d |
| 3 | **bedding Works** | 2027-01-03 → 2027-01-10 (+7d) | 2027-01-26 → 2027-02-02 (+7d) |  |
| SDR-2-CON-TS-ZA-2930 | Sand bedding for TSE HDPE Pipes 90 mm | 2027-01-03 → 2027-01-10 (+7d) | 2027-01-26 → 2027-02-02 (+7d) | 20d → 14d |
| 2 | **Pipes Laying** | 2027-01-27 → 2027-02-03 (+7d) | 2027-02-20 → 2027-02-28 (+8d) |  |
| SDR-2-CON-TS-ZA-2910 | Install TSE 90 mm HDPE Pipe | 2027-01-27 → 2027-02-03 (+7d) | 2027-02-20 → 2027-02-28 (+8d) | 20d → 14d |
| 5 | **Testing** | 2027-03-08 → 2027-03-20 (+12d) | 2027-04-04 → 2027-04-11 (+7d) |  |
| SDR-2-CON-TS-ZA-2920 | Testing of TSE HDPE Pipe 90 mm. | 2027-03-08 → 2027-03-20 (+12d) | 2027-04-04 → 2027-04-11 (+7d) | 8d → 2d |
| 4 | **Backfilling** | 2027-04-05 → 2027-04-12 (+7d) | 2027-04-28 → 2027-05-05 (+7d) |  |
| SDR-2-CON-TS-ZA-2940 | Backfilling of TSE HDPE Pipe 90 mm. | 2027-04-05 → 2027-04-12 (+7d) | 2027-04-28 → 2027-05-05 (+7d) | 8d → 2d |
| 3 | **Valve Chambers & Valves** | 2026-10-19 → 2026-10-26 (+7d) | 2027-05-05 → 2027-05-12 (+7d) |  |
| 3 | **Excavation** | 2026-10-19 → 2026-10-26 (+7d) | 2026-12-03 → 2026-12-10 (+7d) |  |
| SDR-2-CON-TS-ZA-3450 | Excavation for Valve Chambers Section 1 | 2026-10-19 → 2026-10-26 (+7d) | 2026-11-10 → 2026-11-17 (+7d) | 47d → 55d |
| SDR-2-CON-TS-ZA-2960 | Excavation for Valve Chambers Section 2 | 2026-11-11 → 2026-11-18 (+7d) | 2026-12-03 → 2026-12-10 (+7d) | 47d → 55d |
| 1 | **bedding Works** | 2027-01-26 → 2027-02-02 (+7d) | 2027-02-15 → 2027-02-23 (+8d) |  |
| SDR-2-CON-TS-ZA-2950 | Sand bedding for Valve Chambers | 2027-01-26 → 2027-02-02 (+7d) | 2027-02-15 → 2027-02-23 (+8d) | 2d → 10d |
| 4 | **Install Chambers & Valves** | 2027-02-16 → 2027-02-24 (+8d) | 2027-03-17 → 2027-03-24 (+7d) |  |
| SDR-2-CON-TS-ZA-2970 | Valve Chambers & Valves Installation | 2027-02-16 → 2027-02-24 (+8d) | 2027-03-17 → 2027-03-24 (+7d) | 2d → 10d |
| 5 | **Testing** | 2027-03-18 → 2027-03-25 (+7d) | 2027-04-10 → 2027-04-17 (+7d) |  |
| SDR-2-CON-TS-ZA-2980 | Testing Chambers & Valves Installation | 2027-03-18 → 2027-03-25 (+7d) | 2027-04-10 → 2027-04-17 (+7d) | 2d → 10d |
| 6 | **Backfilling** | 2027-04-12 → 2027-04-19 (+7d) | 2027-05-05 → 2027-05-12 (+7d) |  |
| SDR-2-CON-TS-ZA-2990 | Backfilling Chambers & Valves Installation | 2027-04-12 → 2027-04-19 (+7d) | 2027-05-05 → 2027-05-12 (+7d) | 2d → 10d |
| 4 | **TSE NETWORK IN ( PH2-G-MCG0 )** |  | 2027-05-31 → 2027-06-07 (+7d) |  |
| 6 | **Pipes Work** |  | 2027-01-31 → 2027-02-07 (+7d) |  |
| 1 | **Excavation** |  | 2026-10-19 → 2026-10-26 (+7d) |  |
| SDR-2-CON-TS-ZA-3000 | Excavation for TSE HDPE Pipes 90 mm Section 2 |  | 2026-10-19 → 2026-10-26 (+7d) | 69d → 63d |
| 3 | **bedding Works** | 2026-10-20 → 2026-10-27 (+7d) | 2026-11-12 → 2026-11-19 (+7d) |  |
| SDR-2-CON-TS-ZA-3030 | Sand bedding for TSE HDPE Pipes 90 mm | 2026-10-20 → 2026-10-27 (+7d) | 2026-11-12 → 2026-11-19 (+7d) | 91d → 85d |
| 2 | **Pipes Laying** | 2026-11-14 → 2026-11-21 (+7d) | 2026-12-07 → 2026-12-14 (+7d) |  |
| SDR-2-CON-TS-ZA-3010 | Install TSE 90 mm HDPE Pipe | 2026-11-14 → 2026-11-21 (+7d) | 2026-12-07 → 2026-12-14 (+7d) | 91d → 85d |
| 5 | **Testing** | 2026-12-08 → 2026-12-15 (+7d) | 2026-12-22 → 2026-12-29 (+7d) |  |
| SDR-2-CON-TS-ZA-3020 | Testing of TSE HDPE Pipe 90 mm. | 2026-12-08 → 2026-12-15 (+7d) | 2026-12-22 → 2026-12-29 (+7d) | 91d → 85d |
| 4 | **Backfilling** | 2027-01-07 → 2027-01-14 (+7d) | 2027-01-31 → 2027-02-07 (+7d) |  |
| SDR-2-CON-TS-ZA-3040 | Backfilling of TSE HDPE Pipe 90 mm. | 2027-01-07 → 2027-01-14 (+7d) | 2027-01-31 → 2027-02-07 (+7d) | 78d → 72d |
| 3 | **Valve Chambers & Valves** | 2026-10-19 → 2026-10-26 (+7d) | 2027-05-31 → 2027-06-07 (+7d) |  |
| 3 | **Excavation** | 2026-10-19 → 2026-10-26 (+7d) | 2026-12-03 → 2026-12-10 (+7d) |  |
| SDR-2-CON-TS-ZA-3470 | Excavation for Valve Chambers Section 1 | 2026-10-19 → 2026-10-26 (+7d) | 2026-11-10 → 2026-11-17 (+7d) | 83d → 77d |
| SDR-2-CON-TS-ZA-3060 | Excavation for Valve Chambers Section 2 | 2026-11-11 → 2026-11-18 (+7d) | 2026-12-03 → 2026-12-10 (+7d) | 83d → 77d |
| 1 | **bedding Works** | 2027-01-26 → 2027-02-02 (+7d) | 2027-02-18 → 2027-02-27 (+9d) |  |
| SDR-2-CON-TS-ZA-3050 | Sand bedding for Valve Chambers | 2027-01-26 → 2027-02-02 (+7d) | 2027-02-18 → 2027-02-27 (+9d) | 38d → 32d |
| 4 | **Install Chambers & Valves** | 2027-03-22 → 2027-03-29 (+7d) | 2027-04-14 → 2027-04-21 (+7d) |  |

| ID | Task | Start | Finish | Total float |
| --- | --- | --- | --- | --- |
| SDR-2-CON-TS-ZA-3070 | Valve Chambers & Valves Installation | 2027-03-22 → 2027-03-29 (+7d) | 2027-04-14 → 2027-04-21 (+7d) | 17d → 11d |
| 5 | **Testing** | 2027-04-08 → 2027-04-15 (+7d) | 2027-04-29 → 2027-05-06 (+7d) |  |
| SDR-2-CON-TS-ZA-3080 | Testing Chambers & Valves Installation | 2027-04-08 → 2027-04-15 (+7d) | 2027-04-29 → 2027-05-06 (+7d) | 17d → 11d |
| 6 | **Backfilling** | 2027-05-02 → 2027-05-09 (+7d) | 2027-05-31 → 2027-06-07 (+7d) |  |
| SDR-2-CON-TS-ZA-3090 | Backfilling Chambers & Valves Installation | 2027-05-02 → 2027-05-09 (+7d) | 2027-05-31 → 2027-06-07 (+7d) | 17d → 11d |
| 5 | **TSE NETWORK IN ( PH2-G-MCZ0 )** |  | 2027-06-10 → 2027-06-17 (+7d) |  |
| 6 | **Pipes Work** |  | 2027-06-10 → 2027-06-17 (+7d) |  |
| 1 | **Excavation** |  | 2026-10-19 → 2026-10-26 (+7d) |  |
| SDR-2-CON-TS-ZA-2500 | Excavation for TSE HDPE Pipes 125 mm Section 2 |  | 2026-10-19 → 2026-10-26 (+7d) | 68d → 62d |
| SDR-2-CON-TS-ZA-3480 | Excavation for TSE HDPE Pipes 125 mm Section 1 |  | 2026-10-19 → 2026-10-26 (+7d) | 52d → 46d |
| 3 | **bedding Works** | 2027-02-10 → 2027-02-17 (+7d) | 2027-03-07 → 2027-03-18 (+11d) |  |
| SDR-2-CON-TS-ZA-2530 | Sand bedding for TSE HDPE Pipes 125 mm | 2027-02-10 → 2027-02-17 (+7d) | 2027-03-07 → 2027-03-18 (+11d) | 8d → 2d |
| 2 | **Pipes Laying** | 2027-03-08 → 2027-03-20 (+12d) | 2027-04-05 → 2027-04-12 (+7d) |  |
| SDR-2-CON-TS-ZA-2510 | Install TSE 125 mm HDPE Pipe | 2027-03-08 → 2027-03-20 (+12d) | 2027-04-05 → 2027-04-12 (+7d) | 20d → 14d |
| 5 | **Testing** | 2027-04-08 → 2027-04-13 (+5d) | 2027-04-17 → 2027-04-21 (+4d) |  |
| SDR-2-CON-TS-ZA-2520 | Testing of TSE HDPE Pipe 125 mm. | 2027-04-08 → 2027-04-13 (+5d) | 2027-04-17 → 2027-04-21 (+4d) | 18d → 14d |
| 4 | **Backfilling** | 2027-05-22 → 2027-05-29 (+7d) | 2027-06-10 → 2027-06-17 (+7d) |  |
| SDR-2-CON-TS-ZA-2540 | Backfilling of TSE HDPE Pipe 125 mm. | 2027-05-22 → 2027-05-29 (+7d) | 2027-06-10 → 2027-06-17 (+7d) | 8d → 2d |
| 3 | **Valve Chambers & Valves** | 2026-10-19 → 2026-10-26 (+7d) | 2027-04-29 → 2027-05-06 (+7d) |  |
| 3 | **Excavation** | 2026-10-19 → 2026-10-26 (+7d) | 2026-12-03 → 2026-12-10 (+7d) |  |
| SDR-2-CON-TS-ZA-3490 | Excavation for Valve Chambers Section 1 | 2026-10-19 → 2026-10-26 (+7d) | 2026-11-10 → 2026-11-17 (+7d) | 52d → 46d |
| SDR-2-CON-TS-ZA-2560 | Excavation for Valve Chambers Section 2 | 2026-11-11 → 2026-11-18 (+7d) | 2026-12-03 → 2026-12-10 (+7d) | 52d → 46d |
| 1 | **bedding Works** | 2027-01-26 → 2027-02-02 (+7d) | 2027-02-18 → 2027-02-27 (+9d) |  |
| SDR-2-CON-TS-ZA-2550 | Sand bedding for Valve Chambers | 2027-01-26 → 2027-02-02 (+7d) | 2027-02-18 → 2027-02-27 (+9d) | 7d → 1d |
| 4 | **Install Chambers & Valves** | 2027-02-20 → 2027-02-28 (+8d) | 2027-03-21 → 2027-03-28 (+7d) |  |
| SDR-2-CON-TS-ZA-2570 | Valve Chambers & Valves Installation | 2027-02-20 → 2027-02-28 (+8d) | 2027-03-21 → 2027-03-28 (+7d) | 7d → 1d |
| 5 | **Testing** | 2027-03-22 → 2027-03-29 (+7d) | 2027-04-07 → 2027-04-14 (+7d) |  |
| SDR-2-CON-TS-ZA-2580 | Testing Chambers & Valves Installation | 2027-03-22 → 2027-03-29 (+7d) | 2027-04-07 → 2027-04-14 (+7d) | 7d → 1d |
| 6 | **Backfilling** | 2027-04-11 → 2027-04-18 (+7d) | 2027-04-29 → 2027-05-06 (+7d) |  |
| SDR-2-CON-TS-ZA-2590 | Backfilling Chambers & Valves Installation | 2027-04-11 → 2027-04-18 (+7d) | 2027-04-29 → 2027-05-06 (+7d) | 7d → 1d |
| PW | **Portable Water** |  | 2027-06-07 → 2027-06-14 (+7d) |  |
| ZA | **ZONE A** |  | 2027-06-07 → 2027-06-14 (+7d) |  |
| 1 | **PORTABLE WATER IN ( PH2-COL-MC10 )** |  | 2027-05-12 → 2027-05-25 (+13d) |  |
| 7 | **Pipes Work** |  | 2027-04-18 → 2027-04-25 (+7d) |  |
| 1 | **Excavation** |  | 2027-01-25 → 2027-02-01 (+7d) |  |
| SDR-2-CON-PW-ZA-3710 | Excavation for PW HDPE Pipes 315 mm Section 1 |  | 2026-12-27 → 2026-12-06 (-21d) | 0d → 22d |
| SDR-2-CON-PW-ZA-1000 | Excavation for PW HDPE Pipes 315 mm Section 2 |  | 2027-01-25 → 2027-02-01 (+7d) | 59d → 53d |
| 8 | **bedding Works** |  | 2027-03-16 → 2027-03-23 (+7d) |  |
| SDR-2-CON-PW-ZA-2200 | Sand bedding for PW HDPE Pipes 315 mm |  | 2027-03-16 → 2027-03-23 (+7d) | 21d → 15d |
| 2 | **Pipes Laying** |  | 2027-03-21 → 2027-03-28 (+7d) |  |
| SDR-2-CON-PW-ZA-1010 | Install PW 315 mm HDPE Pipe |  | 2027-03-21 → 2027-03-28 (+7d) | 17d → 11d |
| 5 | **Testing** | 2027-03-22 → 2027-03-29 (+7d) | 2027-03-29 → 2027-04-05 (+7d) |  |
| SDR-2-CON-PW-ZA-1080 | Testing of PW HDPE Pipe 315 mm. | 2027-03-22 → 2027-03-29 (+7d) | 2027-03-29 → 2027-04-05 (+7d) | 17d → 11d |
| 9 | **Backfilling** | 2027-03-30 → 2027-04-06 (+7d) | 2027-04-18 → 2027-04-25 (+7d) |  |
| SDR-2-CON-PW-ZA-2210 | Backfilling of PW HDPE Pipe 315 mm. | 2027-03-30 → 2027-04-06 (+7d) | 2027-04-18 → 2027-04-25 (+7d) | 17d → 11d |
| 3 | **Valve Chambers & Valves & Fire Hydrant** | 2026-12-27 → 2026-12-06 (-21d) | 2027-05-12 → 2027-05-25 (+13d) |  |
| 3 | **Excavation** | 2026-12-27 → 2026-12-06 (-21d) | 2027-02-10 → 2027-01-20 (-21d) |  |
| SDR-2-CON-PW-ZA-3720 | Excavation for Valve Chambers Section 1 | 2026-12-27 → 2026-12-06 (-21d) | 2027-01-18 → 2026-12-28 (-21d) | 26d → 51d |
| SDR-2-CON-PW-ZA-1040 | Excavation for Valve Chambers Section 2 | 2027-01-19 → 2026-12-29 (-21d) | 2027-02-10 → 2027-01-20 (-21d) | 26d → 51d |
| 1 | **bedding Works** | 2027-02-11 → 2027-01-21 (-21d) | 2027-03-02 → 2027-02-08 (-22d) |  |
| SDR-2-CON-PW-ZA-1020 | Sand bedding for Valve Chambers | 2027-02-11 → 2027-01-21 (-21d) | 2027-03-02 → 2027-02-08 (-22d) | 26d → 51d |
| 4 | **Install Chambers & Valves & Fire Hydrant** | 2027-03-03 → 2027-02-09 (-22d) | 2027-03-30 → 2027-03-04 (-26d) |  |
| SDR-2-CON-PW-ZA-1050 | Install Chambers & Valves | 2027-03-03 → 2027-02-09 (-22d) | 2027-03-30 → 2027-03-04 (-26d) | 26d → 51d |
| 2 | **Testing** | 2027-04-14 → 2027-04-21 (+7d) | 2027-04-22 → 2027-04-29 (+7d) |  |
| SDR-2-CON-PW-ZA-1030 | Testing for Chambers & Valves | 2027-04-14 → 2027-04-21 (+7d) | 2027-04-22 → 2027-04-29 (+7d) | 14d → 22d |
| 6 | **Backfilling** | 2027-04-19 → 2027-04-26 (+7d) | 2027-05-12 → 2027-05-25 (+13d) |  |
| SDR-2-CON-PW-ZA-1070 | Backfilling for Chambers & Valves | 2027-04-19 → 2027-04-26 (+7d) | 2027-05-12 → 2027-05-25 (+13d) | 14d → 22d |
| 2 | **PORTABLE WATER IN ( PH2-COL-MC20 )** |  | 2027-04-26 → 2027-04-19 (-7d) |  |
| 7 | **Pipes Work** |  | 2027-04-12 → 2027-04-19 (+7d) |  |
| 8 | **bedding Works** |  | 2027-01-20 → 2027-01-27 (+7d) |  |
| SDR-2-CON-PW-ZA-2340 | Sand bedding for PW HDPE Pipes 315 mm |  | 2027-01-20 → 2027-01-27 (+7d) | 87d → 81d |
| 2 | **Pipes Laying** |  | 2027-01-20 → 2027-01-27 (+7d) |  |
| SDR-2-CON-PW-ZA-2270 | Install PW 315 mm HDPE Pipe |  | 2027-01-20 → 2027-01-27 (+7d) | 87d → 81d |
| 5 | **Testing** |  | 2027-02-11 → 2027-02-18 (+7d) |  |
| SDR-2-CON-PW-ZA-2330 | Testing of PW HDPE Pipe 315 mm. |  | 2027-02-11 → 2027-02-18 (+7d) | 68d → 62d |
| 9 | **Backfilling** |  | 2027-04-12 → 2027-04-19 (+7d) |  |
| SDR-2-CON-PW-ZA-2350 | Backfilling of PW HDPE Pipe 315 mm. |  | 2027-04-12 → 2027-04-19 (+7d) | 22d → 16d |
| 3 | **Valve Chambers & Valves & Fire Hydrant** | 2026-12-28 → 2026-12-07 (-21d) | 2027-04-26 → 2027-04-05 (-21d) |  |
| 3 | **Excavation** | 2026-12-28 → 2026-12-07 (-21d) | 2027-02-14 → 2027-01-24 (-21d) |  |
| SDR-2-CON-PW-ZA-3740 | Excavation for Valve Chambers Section 1 | 2026-12-28 → 2026-12-07 (-21d) | 2027-01-20 → 2026-12-30 (-21d) | 24d → 42d |

| ID | Task | Start | Finish | Complete | Total float | Predecessors |
| --- | --- | --- | --- | --- | --- | --- |
| SDR-2-CON-PW-ZA-2300 | Excavation for Valve Chambers Section 2 | 2027-01-21 → 2026-12-31 (-21d) | 2027-02-14 → 2027-01-24 (-21d) |  | 24d → 42d |  |
| 1 | **bedding Works** | 2027-02-15 → 2027-01-25 (-21d) | 2027-03-04 → 2027-02-10 (-22d) |  |  |  |
| SDR-2-CON-PW-ZA-2280 | Sand bedding for Valve Chambers | 2027-02-15 → 2027-01-25 (-21d) | 2027-03-04 → 2027-02-10 (-22d) |  | 24d → 42d |  |
| 4 | **Install Chambers & Valves & Fire Hydrant** | 2027-03-06 → 2027-02-11 (-23d) | 2027-03-27 → 2027-03-01 (-26d) |  |  |  |
| SDR-2-CON-PW-ZA-2310 | Install Chambers & Valves | 2027-03-06 → 2027-02-11 (-23d) | 2027-03-27 → 2027-03-01 (-26d) |  | 24d → 42d |  |
| 2 | **Testing** | 2027-03-28 → 2027-03-02 (-26d) | 2027-04-04 → 2027-03-14 (-21d) |  |  |  |
| SDR-2-CON-PW-ZA-2290 | Testing for Chambers & Valves | 2027-03-28 → 2027-03-02 (-26d) | 2027-04-04 → 2027-03-14 (-21d) |  | 24d → 42d |  |
| 6 | **Backfilling** | 2027-04-05 → 2027-03-15 (-21d) | 2027-04-26 → 2027-04-05 (-21d) |  |  |  |
| SDR-2-CON-PW-ZA-2320 | Backfilling for Chambers & Valves | 2027-04-05 → 2027-03-15 (-21d) | 2027-04-26 → 2027-04-05 (-21d) |  | 24d → 42d |  |
| 11 | **PORTABLE WATER IN ( PH2-A-MCA0 )** | 2026-12-28 → 2026-12-07 (-21d) | 2027-05-13 → 2027-05-26 (+13d) |  |  |  |
| 7 | **Pipes Work** | 2026-12-28 → 2026-12-07 (-21d) | 2027-05-12 → 2027-05-25 (+13d) |  |  |  |
| 1 | **Excavation** | 2026-12-28 → 2026-12-07 (-21d) | 2027-02-20 → 2027-02-28 (+8d) |  |  |  |
| SDR-2-CON-PW-ZA-3750 | Excavation for PW HDPE Pipe 225 mm. Section 1 | 2026-12-28 → 2026-12-07 (-21d) | 2027-01-20 → 2026-12-30 (-21d) |  | 0d → 22d | SDR-2-CON-PW-ZA-3730 SS+3d → SDR-2-CON-PW-ZA-3730 SS |
| SDR-2-CON-PW-ZA-1200 | Excavation for PW HDPE Pipe 225 mm. Section 2 | 2027-01-27 → 2027-02-03 (+7d) | 2027-02-20 → 2027-02-28 (+8d) |  | 5d → 13d |  |
| 3 | **bedding Works** | 2027-02-21 → 2027-03-01 (+8d) | 2027-03-21 → 2027-03-28 (+7d) |  |  |  |
| SDR-2-CON-PW-ZA-2220 | Sand bedding for PW HDPE Pipe 225 mm. | 2027-02-21 → 2027-03-01 (+8d) | 2027-03-21 → 2027-03-28 (+7d) |  | 5d → 13d |  |
| 2 | **Pipes Laying** | 2027-03-22 → 2027-03-29 (+7d) | 2027-04-10 → 2027-04-17 (+7d) |  |  |  |
| SDR-2-CON-PW-ZA-1210 | Install PW 225 mm HDPE Pipe | 2027-03-22 → 2027-03-29 (+7d) | 2027-04-10 → 2027-04-17 (+7d) |  | 5d → 13d |  |
| 5 | **Testing** | 2027-04-15 → 2027-04-22 (+7d) | 2027-04-22 → 2027-04-29 (+7d) |  |  |  |
| SDR-2-CON-PW-ZA-1280 | Testing of PW HDPE Pipe 225 mm. | 2027-04-15 → 2027-04-22 (+7d) | 2027-04-22 → 2027-04-29 (+7d) |  | 4d → 12d |  |
| 4 | **Backfilling** | 2027-04-24 → 2027-05-01 (+7d) | 2027-05-12 → 2027-05-25 (+13d) |  |  |  |
| SDR-2-CON-PW-ZA-2230 | Backfilling of PW HDPE Pipe 225 mm. | 2027-04-24 → 2027-05-01 (+7d) | 2027-05-12 → 2027-05-25 (+13d) |  | 4d → 12d |  |
| 3 | **Valve Chambers & Valves & Fire Hydrant** | 2026-12-28 → 2026-12-07 (-21d) | 2027-05-13 → 2027-05-26 (+13d) |  |  |  |
| 3 | **Excavation** | 2026-12-28 → 2026-12-07 (-21d) | 2027-02-11 → 2027-01-28 (-14d) |  |  |  |
| SDR-2-CON-PW-ZA-3760 | Excavation for Valve Chambers Section 1 | 2026-12-28 → 2026-12-07 (-21d) | 2027-01-19 → 2026-12-29 (-21d) |  | 17d → 35d |  |
| SDR-2-CON-PW-ZA-2680 | Excavation for Valve Chambers Section 2 | 2027-01-20 → 2027-01-06 (-14d) | 2027-02-11 → 2027-01-28 (-14d) |  | 17d → 29d |  |
| 1 | **bedding Works** | 2027-02-13 → 2027-01-30 (-14d) | 2027-03-08 → 2027-02-21 (-15d) |  |  |  |
| SDR-2-CON-PW-ZA-2660 | Sand bedding for Valve Chambers | 2027-02-13 → 2027-01-30 (-14d) | 2027-03-08 → 2027-02-21 (-15d) |  | 17d → 29d |  |
| 4 | **Install Chambers & Valves & Fire Hydrant** | 2027-03-14 → 2027-02-23 (-19d) | 2027-04-05 → 2027-03-22 (-14d) |  |  |  |
| SDR-2-CON-PW-ZA-2690 | Install Chambers & Valves | 2027-03-14 → 2027-02-23 (-19d) | 2027-04-05 → 2027-03-22 (-14d) |  | 17d → 29d |  |
| 2 | **Testing** | 2027-04-18 → 2027-04-25 (+7d) | 2027-04-26 → 2027-05-03 (+7d) |  |  |  |
| SDR-2-CON-PW-ZA-2670 | Testing for Chambers & Valves | 2027-04-18 → 2027-04-25 (+7d) | 2027-04-26 → 2027-05-03 (+7d) |  | 10d → 4d |  |
| 6 | **Backfilling** | 2027-04-27 → 2027-05-04 (+7d) | 2027-05-13 → 2027-05-26 (+13d) |  |  |  |
| SDR-2-CON-PW-ZA-2700 | Backfilling for Chambers & Valves | 2027-04-27 → 2027-05-04 (+7d) | 2027-05-13 → 2027-05-26 (+13d) |  | 13d → 21d |  |
| 12 | **PORTABLE WATER IN ( PH2-A-MCB0 )** | 2026-12-31 → 2026-12-07 (-24d) | 2027-06-07 → 2027-06-14 (+7d) |  |  |  |
| 7 | **Pipes Work** | 2026-12-31 → 2026-12-07 (-24d) | 2027-06-07 → 2027-06-14 (+7d) |  |  |  |
| 1 | **Excavation** | 2026-12-31 → 2026-12-07 (-24d) | 2027-02-17 → 2027-01-24 (-24d) |  |  |  |
| SDR-2-CON-PW-ZA-3770 | Excavation for PW HDPE Pipe 225 mm. Section 1 | 2026-12-31 → 2026-12-07 (-24d) | 2027-01-24 → 2026-12-30 (-25d) |  | 0d → 22d | SDR-2-CON-PW-ZA-3750 SS+3d → SDR-2-CON-PW-ZA-3750 SS |
| SDR-2-CON-PW-ZA-2710 | Excavation for PW HDPE Pipe 225 mm. Section 2 | 2027-01-25 → 2026-12-31 (-25d) | 2027-02-17 → 2027-01-24 (-24d) |  | 52d → 60d |  |
| 3 | **bedding Works** | 2027-03-17 → 2027-03-24 (+7d) | 2027-04-10 → 2027-04-17 (+7d) |  |  |  |
| SDR-2-CON-PW-ZA-2740 | Sand bedding for PW HDPE Pipe 225 mm. | 2027-03-17 → 2027-03-24 (+7d) | 2027-04-10 → 2027-04-17 (+7d) |  | 34d → 15d |  |
| 2 | **Pipes Laying** | 2027-04-11 → 2027-04-18 (+7d) | 2027-05-03 → 2027-05-10 (+7d) |  |  |  |
| SDR-2-CON-PW-ZA-2720 | Install PW 225 mm HDPE Pipe | 2027-04-11 → 2027-04-18 (+7d) | 2027-05-03 → 2027-05-10 (+7d) |  | 34d → 15d |  |
| 5 | **Testing** | 2027-05-22 → 2027-05-29 (+7d) | 2027-05-30 → 2027-06-06 (+7d) |  |  |  |
| SDR-2-CON-PW-ZA-2730 | Testing of PW HDPE Pipe 225 mm. | 2027-05-22 → 2027-05-29 (+7d) | 2027-05-30 → 2027-06-06 (+7d) |  | 24d → 5d |  |
| 4 | **Backfilling** | 2027-05-24 → 2027-05-31 (+7d) | 2027-06-07 → 2027-06-14 (+7d) |  |  |  |
| SDR-2-CON-PW-ZA-2750 | Backfilling of PW HDPE Pipe 225 mm. | 2027-05-24 → 2027-05-31 (+7d) | 2027-06-07 → 2027-06-14 (+7d) |  | 24d → 5d |  |
| 3 | **Valve Chambers & Valves & Fire Hydrant** | 2026-12-31 → 2026-12-07 (-24d) | 2027-05-03 → 2027-02-13 (-79d) |  |  |  |
| 3 | **Excavation** | 2026-12-31 → 2026-12-07 (-24d) | 2027-02-17 → 2026-12-30 (-49d) |  |  |  |
| SDR-2-CON-PW-ZA-2780 | Excavation for Valve Chambers Section 2 | 2027-01-25 → 2026-12-07 (-49d) | 2027-02-17 → 2026-12-30 (-49d) |  | 4d → 99d | SDR-2-CON-PW-ZA-3780 → SDR-2-CON-PW-ZA-3780 SS |
| SDR-2-CON-PW-ZA-3780 | Excavation for Valve Chambers Section 1 | 2026-12-31 → 2026-12-07 (-24d) | 2027-01-24 → 2026-12-30 (-25d) |  | 4d → 99d |  |
| 1 | **bedding Works** | 2027-02-18 → 2026-12-07 (-73d) | 2027-03-18 → 2026-12-29 (-79d) |  |  |  |
| SDR-2-CON-PW-ZA-2760 | Sand bedding for Valve Chambers | 2027-02-18 → 2026-12-07 (-73d) | 2027-03-18 → 2026-12-29 (-79d) |  | 4d → 99d | SDR-2-CON-PW-ZA-2780 → SDR-2-CON-PW-ZA-2780 SS |
| 4 | **Install Chambers & Valves & Fire Hydrant** | 2027-03-20 → 2026-12-30 (-80d) | 2027-04-10 → 2027-01-20 (-80d) |  |  |  |
| SDR-2-CON-PW-ZA-2790 | Install Chambers & Valves | 2027-03-20 → 2026-12-30 (-80d) | 2027-04-10 → 2027-01-20 (-80d) |  | 4d → 99d |  |
| 2 | **Testing** | 2027-04-11 → 2027-01-21 (-80d) | 2027-04-19 → 2027-01-30 (-79d) |  |  |  |
| SDR-2-CON-PW-ZA-2770 | Testing for Chambers & Valves | 2027-04-11 → 2027-01-21 (-80d) | 2027-04-19 → 2027-01-30 (-79d) |  | 4d → 99d |  |
| 6 | **Backfilling** | 2027-04-20 → 2027-01-31 (-79d) | 2027-05-03 → 2027-02-13 (-79d) |  |  |  |
| SDR-2-CON-PW-ZA-2800 | Backfilling for Chambers & Valves | 2027-04-20 → 2027-01-31 (-79d) | 2027-05-03 → 2027-02-13 (-79d) |  | 4d → 99d |  |
| 3 | **PORTABLE WATER IN ( PH2-A-MCC0 )** |  | 2027-06-03 → 2027-05-04 (-30d) |  |  |  |
| 7 | **Pipes Work** |  | 2027-05-04 → 2027-03-16 (-49d) |  |  |  |
| 1 | **Excavation** |  | 2027-02-17 → 2026-12-31 (-48d) |  |  |  |
| SDR-2-CON-PW-ZA-1400 | Excavation for PW HDPE Pipe 160 mm. Section 1 |  |  |  |  | SDR-2-CON-PW-ZA-3770 FF → SDR-2-CON-PW-ZA-3790 |
| SDR-2-CON-PW-ZA-3790 | Excavation for PW HDPE Pipe 160 mm. Section 2 | 2026-10-03 A → 2026-10-01 A (-2d) | 2027-02-17 → 2026-12-31 (-48d) | 10% → 50% | 3d → 22d | SDR-2-CON-PW-ZA-1400 → SDR-2-CON-PW-ZA-3770 FF |
| 3 | **bedding Works** | 2027-02-18 → 2026-10-22 (-119d) | 2027-03-18 → 2027-01-23 (-54d) |  |  |  |
| SDR-2-CON-PW-ZA-2240 | Sand bedding for PW HDPE Pipe 160 mm. | 2027-02-18 → 2026-10-22 A (-119d) | 2027-03-18 → 2027-01-23 (-54d) | 0% → 25% | 3d → 77d | SDR-2-CON-PW-ZA-3790 → SDR-2-CON-PW-ZA-1400 |
| 2 | **Pipes Laying** | 2027-03-20 → 2026-10-22 (-149d) | 2027-04-11 → 2027-02-15 (-55d) |  |  |  |
| SDR-2-CON-PW-ZA-1410 | Install PW 160 mm HDPE Pipe | 2027-03-20 → 2026-10-22 A (-149d) | 2027-04-11 → 2027-02-15 (-55d) | 0% → 25% | 3d → 77d |  |
| 5 | **Testing** | 2027-04-12 → 2027-02-16 (-55d) | 2027-04-20 → 2027-02-25 (-54d) |  |  |  |
| SDR-2-CON-PW-ZA-1480 | Testing of PW HDPE Pipe 160 mm. | 2027-04-12 → 2027-02-16 (-55d) | 2027-04-20 → 2027-02-25 (-54d) |  | 3d → 77d |  |

| ID | Task | Start | Finish | Complete | Total float | Predecessors |
| --- | --- | --- | --- | --- | --- | --- |
| 4 | **Backfilling** | 2027-04-21 → 2027-02-27 (-53d) | 2027-05-04 → 2027-03-16 (-49d) |  |  |  |
| SDR-2-CON-PW-ZA-2250 | Backfilling of PW HDPE Pipe 160 mm. | 2027-04-21 → 2027-02-27 (-53d) | 2027-05-04 → 2027-03-16 (-49d) |  | 3d → 77d |  |
| 3 | **Valve Chambers & Valves & Fire Hydrant** | 2027-01-25 → 2026-12-31 (-25d) | 2027-06-03 → 2027-05-04 (-30d) |  |  |  |
| 3 | **Excavation** | 2027-01-25 → 2026-12-31 (-25d) | 2027-03-20 → 2027-02-17 (-31d) |  |  |  |
| SDR-2-CON-PW-ZA-3800 | Excavation for Valve Chambers Section 1 | 2027-01-25 → 2026-12-31 (-25d) | 2027-02-17 → 2027-01-24 (-24d) |  | 0d → 35d | SDR-2-CON-PW-ZA-1400 SS → SDR-2-CON-PW-ZA-3790 SS |
| SDR-2-CON-PW-ZA-3230 | Excavation for Valve Chambers Section 2 | 2027-02-18 → 2027-01-25 (-24d) | 2027-03-20 → 2027-02-17 (-31d) |  | 0d → 35d |  |
| 1 | **bedding Works** | 2027-03-21 → 2027-02-18 (-31d) | 2027-04-12 → 2027-03-18 (-25d) |  |  |  |
| SDR-2-CON-PW-ZA-3210 | Sand bedding for Valve Chambers | 2027-03-21 → 2027-02-18 (-31d) | 2027-04-12 → 2027-03-18 (-25d) |  | 0d → 35d |  |
| 4 | **Install Chambers & Valves & Fire Hydrant** | 2027-04-13 → 2027-03-20 (-24d) | 2027-05-05 → 2027-04-11 (-24d) |  |  |  |
| SDR-2-CON-PW-ZA-3240 | Install Chambers & Valves | 2027-04-13 → 2027-03-20 (-24d) | 2027-05-05 → 2027-04-11 (-24d) |  | 0d → 35d |  |
| 2 | **Testing** | 2027-05-06 → 2027-04-12 (-24d) | 2027-05-12 → 2027-04-18 (-24d) |  |  |  |
| SDR-2-CON-PW-ZA-3220 | Testing for Chambers & Valves | 2027-05-06 → 2027-04-12 (-24d) | 2027-05-12 → 2027-04-18 (-24d) |  | 0d → 35d |  |
| 6 | **Backfilling** | 2027-05-13 → 2027-04-19 (-24d) | 2027-06-03 → 2027-05-04 (-30d) |  |  |  |
| SDR-2-CON-PW-ZA-3250 | Backfilling for Chambers & Valves | 2027-05-13 → 2027-04-19 (-24d) | 2027-06-03 → 2027-05-04 (-30d) |  | 0d → 35d |  |
| 4 | **PORTABLE WATER IN ( PH2-A-MCD0 )** |  | 2027-05-30 → 2027-05-11 (-19d) |  |  |  |
| 7 | **Pipes Work** |  | 2027-05-11 → 2027-04-24 (-17d) |  |  |  |
| 1 | **Excavation** |  | 2027-03-02 → 2027-01-06 (-55d) |  |  |  |
| SDR-2-CON-PW-ZA-3260 | Excavation for PW HDPE Pipe 160 mm. Section 1 |  | 2026-10-01 A → 2026-10-04 A (+3d) |  |  | SDR-2-CON-TS-ZA-3260 SS, SDR-2-CON-PW-ZA-1400 FF, SDR-2-CON-SL-ZA-3290 → SDR-2-CON-PW-ZA-3810, SDR-2-CON-TE-ZA-4170, SDR-2-CON-TE-ZA-4180, SDR-2-CON-TE-ZA-4080, SDR-2-CON-TE-ZA-4090, SDR-2-CON-TE-ZA-3990, SDR-2-CON-TE-ZA-4000, SDR-2-CON-TE-ZA-3900, SDR-2-CON-TE-ZA-3910, SDR-2-CON-TE-ZA-3810, SDR-2-CON-TE-ZA-3820, SDR-2-CON-TE-ZA-3720 |
| SDR-2-CON-PW-ZA-3810 | Excavation for PW HDPE Pipe 160 mm. Section 2 |  | 2027-03-02 → 2027-01-06 (-55d) | 10% → 50% | 7d → 17d | SDR-2-CON-PW-ZA-3260, SDR-2-CON-TE-ZA-4170, SDR-2-CON-TE-ZA-4180, SDR-2-CON-TE-ZA-4080, SDR-2-CON-TE-ZA-4090, SDR-2-CON-TE-ZA-3990, SDR-2-CON-TE-ZA-4000, SDR-2-CON-TE-ZA-3900, SDR-2-CON-TE-ZA-3910, SDR-2-CON-TE-ZA-3810, SDR-2-CON-TE-ZA-3820, SDR-2-CON-TE-ZA-3720 → SDR-2-CON-TS-ZA-1270 SS, SDR-2-CON-PW-ZA-3790 FF, SDR-2-CON-SL-ZA-3290 |
| 3 | **bedding Works** | 2027-03-03 → 2026-10-22 (-132d) | 2027-03-28 → 2027-03-06 (-22d) |  |  |  |
| SDR-2-CON-PW-ZA-3290 | Sand bedding for PW HDPE Pipe 160 mm. | 2027-03-03 → 2026-10-22 A (-132d) | 2027-03-28 → 2027-03-06 (-22d) | 0% → 25% | 7d → 22d | SDR-2-CON-PW-ZA-3810 → SDR-2-CON-PW-ZA-3260 |
| 2 | **Pipes Laying** | 2027-03-29 → 2026-10-24 (-156d) | 2027-04-20 → 2027-04-03 (-17d) |  |  |  |
| SDR-2-CON-PW-ZA-3270 | Install PW 160 mm HDPE Pipe | 2027-03-29 → 2026-10-24 A (-156d) | 2027-04-20 → 2027-04-03 (-17d) | 0% → 25% | 7d → 22d |  |
| 5 | **Testing** | 2027-04-21 → 2027-04-04 (-17d) | 2027-04-29 → 2027-04-12 (-17d) |  |  |  |
| SDR-2-CON-PW-ZA-3280 | Testing of PW HDPE Pipe 160 mm. | 2027-04-21 → 2027-04-04 (-17d) | 2027-04-29 → 2027-04-12 (-17d) |  | 7d → 22d |  |
| 4 | **Backfilling** | 2027-05-01 → 2027-04-13 (-18d) | 2027-05-11 → 2027-04-24 (-17d) |  |  |  |
| SDR-2-CON-PW-ZA-3300 | Backfilling of PW HDPE Pipe 160 mm. | 2027-05-01 → 2027-04-13 (-18d) | 2027-05-11 → 2027-04-24 (-17d) |  | 42d → 44d |  |
| 3 | **Valve Chambers & Valves & Fire Hydrant** | 2027-01-25 → 2027-01-06 (-19d) | 2027-05-30 → 2027-05-11 (-19d) |  |  |  |
| 3 | **Excavation** | 2027-01-25 → 2027-01-06 (-19d) | 2027-03-20 → 2027-03-02 (-18d) |  |  |  |
| SDR-2-CON-PW-ZA-3820 | Excavation for Valve Chambers Section 1 | 2027-01-25 → 2027-01-06 (-19d) | 2027-02-17 → 2027-01-30 (-18d) |  | 1d → 17d | SDR-2-CON-PW-ZA-3260 SS → SDR-2-CON-PW-ZA-3810 SS |
| SDR-2-CON-PW-ZA-3330 | Excavation for Valve Chambers Section 2 | 2027-02-18 → 2027-02-06 (-12d) | 2027-03-20 → 2027-03-02 (-18d) |  | 1d → 12d |  |
| 1 | **bedding Works** | 2027-03-21 → 2027-03-03 (-18d) | 2027-04-10 → 2027-03-28 (-13d) |  |  |  |
| SDR-2-CON-PW-ZA-3310 | Sand bedding for Valve Chambers | 2027-03-21 → 2027-03-03 (-18d) | 2027-04-10 → 2027-03-28 (-13d) |  | 1d → 12d |  |
| 4 | **Install Chambers & Valves & Fire Hydrant** | 2027-04-11 → 2027-03-29 (-13d) | 2027-05-03 → 2027-04-20 (-13d) |  |  |  |
| SDR-2-CON-PW-ZA-3340 | Install Chambers & Valves | 2027-04-11 → 2027-03-29 (-13d) | 2027-05-03 → 2027-04-20 (-13d) |  | 1d → 12d |  |
| 2 | **Testing** | 2027-05-04 → 2027-04-21 (-13d) | 2027-05-12 → 2027-04-29 (-13d) |  |  |  |
| SDR-2-CON-PW-ZA-3320 | Testing for Chambers & Valves | 2027-05-04 → 2027-04-21 (-13d) | 2027-05-12 → 2027-04-29 (-13d) |  | 1d → 12d |  |
| 6 | **Backfilling** | 2027-05-13 → 2027-05-01 (-12d) | 2027-05-30 → 2027-05-11 (-19d) |  |  |  |
| SDR-2-CON-PW-ZA-3350 | Backfilling for Chambers & Valves | 2027-05-13 → 2027-05-01 (-12d) | 2027-05-30 → 2027-05-11 (-19d) |  | 1d → 12d |  |
| 5 | **PORTABLE WATER IN ( PH2-A-MCE0 )** |  | 2027-06-02 → 2027-06-09 (+7d) |  |  |  |
| 7 | **Pipes Work** |  | 2027-01-24 → 2027-01-31 (+7d) |  |  |  |
| 3 | **bedding Works** |  | 2026-12-10 → 2026-12-17 (+7d) |  |  |  |
| SDR-2-CON-PW-ZA-3390 | Sand bedding for PW HDPE Pipe 160 mm. |  | 2026-12-10 → 2026-12-17 (+7d) |  | 84d → 78d |  |
| 2 | **Pipes Laying** |  | 2026-12-28 → 2027-01-04 (+7d) |  |  |  |
| SDR-2-CON-PW-ZA-3370 | Install PW 160 mm HDPE Pipe |  | 2026-12-28 → 2027-01-04 (+7d) |  | 84d → 78d |  |
| 5 | **Testing** | 2026-12-29 → 2027-01-05 (+7d) | 2027-01-06 → 2027-01-13 (+7d) |  |  |  |
| SDR-2-CON-PW-ZA-3380 | Testing of PW HDPE Pipe 160 mm. | 2026-12-29 → 2027-01-05 (+7d) | 2027-01-06 → 2027-01-13 (+7d) |  | 84d → 78d |  |
| 4 | **Backfilling** | 2027-01-07 → 2027-01-14 (+7d) | 2027-01-24 → 2027-01-31 (+7d) |  |  |  |
| SDR-2-CON-PW-ZA-3400 | Backfilling of PW HDPE Pipe 160 mm. | 2027-01-07 → 2027-01-14 (+7d) | 2027-01-24 → 2027-01-31 (+7d) |  | 84d → 78d |  |
| 3 | **Valve Chambers & Valves & Fire Hydrant** | 2026-10-19 → 2026-10-26 (+7d) | 2027-06-02 → 2027-06-09 (+7d) |  |  |  |
| 3 | **Excavation** | 2026-10-19 → 2026-10-26 (+7d) | 2027-03-21 → 2027-03-28 (+7d) |  |  |  |
| SDR-2-CON-PW-ZA-3840 | Excavation for Valve Chambers Section 1 | 2026-10-19 → 2026-10-26 (+7d) | 2026-11-10 → 2026-11-17 (+7d) |  | 88d → 96d |  |
| SDR-2-CON-PW-ZA-3430 | Excavation for Valve Chambers Section 2 | 2027-02-20 → 2027-02-28 (+8d) | 2027-03-21 → 2027-03-28 (+7d) |  | 1.81d → 9.81d |  |
| 1 | **bedding Works** | 2027-03-21 → 2027-03-28 (+7d) | 2027-04-11 → 2027-04-18 (+7d) |  |  |  |
| SDR-2-CON-PW-ZA-3410 | Sand bedding for Valve Chambers | 2027-03-21 → 2027-03-28 (+7d) | 2027-04-11 → 2027-04-18 (+7d) |  | 1.81d → 9.81d |  |
| 4 | **Install Chambers & Valves & Fire Hydrant** | 2027-04-11 → 2027-04-18 (+7d) | 2027-05-01 → 2027-05-08 (+7d) |  |  |  |
| SDR-2-CON-PW-ZA-3440 | Install Chambers & Valves | 2027-04-11 → 2027-04-18 (+7d) | 2027-05-01 → 2027-05-08 (+7d) |  | 1.81d → 9.81d |  |
| 2 | **Testing** | 2027-05-01 → 2027-05-08 (+7d) | 2027-05-10 → 2027-05-23 (+13d) |  |  |  |
| SDR-2-CON-PW-ZA-3420 | Testing for Chambers & Valves | 2027-05-01 → 2027-05-08 (+7d) | 2027-05-10 → 2027-05-23 (+13d) |  | 1.81d → 9.81d |  |
| 6 | **Backfilling** | 2027-05-10 → 2027-05-23 (+13d) | 2027-06-02 → 2027-06-09 (+7d) |  |  |  |
| SDR-2-CON-PW-ZA-3450 | Backfilling for Chambers & Valves | 2027-05-10 → 2027-05-23 (+13d) | 2027-06-02 → 2027-06-09 (+7d) |  | 1.81d → 9.81d |  |
| 6 | **PORTABLE WATER IN ( PH2-A-MCF0 )** |  | 2027-05-11 → 2027-05-24 (+13d) |  |  |  |
| 7 | **Pipes Work** |  | 2027-04-17 → 2027-04-24 (+7d) |  |  |  |
| 1 | **Excavation** |  | 2027-02-04 → 2027-02-11 (+7d) |  |  |  |
| SDR-2-CON-PW-ZA-3460 | Excavation for PW HDPE Pipe 160 mm. Section 2 |  | 2027-02-04 → 2027-02-11 (+7d) |  | 18d → 12d |  |
| 3 | **bedding Works** |  | 2027-02-27 → 2027-03-06 (+7d) |  |  |  |
| SDR-2-CON-PW-ZA-3490 | Sand bedding for PW HDPE Pipe 160 mm. |  | 2027-02-27 → 2027-03-06 (+7d) |  | 18d → 12d |  |
| 2 | **Pipes Laying** |  | 2027-03-27 → 2027-04-03 (+7d) |  |  |  |
| SDR-2-CON-PW-ZA-3470 | Install PW 160 mm HDPE Pipe |  | 2027-03-27 → 2027-04-03 (+7d) |  | 18d → 12d |  |
| 5 | **Testing** | 2027-03-28 → 2027-04-04 (+7d) | 2027-04-03 → 2027-04-10 (+7d) |  |  |  |

| ID | Task | Start | Finish | Complete | Total float |
| --- | --- | --- | --- | --- | --- |
| SDR-2-CON-PW-ZA-3480 | Testing of PW HDPE Pipe 160 mm. | 2027-03-28 → 2027-04-04 (+7d) | 2027-04-03 → 2027-04-10 (+7d) |  | 18d → 12d |
| 4 | **Backfilling** | 2027-04-04 → 2027-04-11 (+7d) | 2027-04-17 → 2027-04-24 (+7d) |  |  |
| SDR-2-CON-PW-ZA-3500 | Backfilling of PW HDPE Pipe 160 mm. | 2027-04-04 → 2027-04-11 (+7d) | 2027-04-17 → 2027-04-24 (+7d) |  | 18d → 12d |
| 3 | **Valve Chambers & Valves & Fire Hydrant** | 2027-01-12 → 2027-01-19 (+7d) | 2027-05-11 → 2027-05-24 (+13d) |  |  |
| 3 | **Excavation** | 2027-01-12 → 2027-01-19 (+7d) | 2027-03-02 → 2027-03-14 (+12d) |  |  |
| SDR-2-CON-PW-ZA-3860 | Excavation for Valve Chambers Section 1 | 2027-01-12 → 2027-01-19 (+7d) | 2027-02-04 → 2027-02-11 (+7d) |  | 15d → 23d |
| SDR-2-CON-PW-ZA-3530 | Excavation for Valve Chambers Section 2 | 2027-02-06 → 2027-02-13 (+7d) | 2027-03-02 → 2027-03-14 (+12d) |  | 15d → 23d |
| 1 | **bedding Works** | 2027-03-03 → 2027-03-15 (+12d) | 2027-03-28 → 2027-04-04 (+7d) |  |  |
| SDR-2-CON-PW-ZA-3510 | Sand bedding for Valve Chambers | 2027-03-03 → 2027-03-15 (+12d) | 2027-03-28 → 2027-04-04 (+7d) |  | 15d → 23d |
| 4 | **Install Chambers & Valves & Fire Hydrant** | 2027-03-29 → 2027-04-05 (+7d) | 2027-04-20 → 2027-04-27 (+7d) |  |  |
| SDR-2-CON-PW-ZA-3540 | Install Chambers & Valves | 2027-03-29 → 2027-04-05 (+7d) | 2027-04-20 → 2027-04-27 (+7d) |  | 15d → 23d |
| 2 | **Testing** | 2027-04-21 → 2027-04-28 (+7d) | 2027-04-28 → 2027-05-05 (+7d) |  |  |
| SDR-2-CON-PW-ZA-3520 | Testing for Chambers & Valves | 2027-04-21 → 2027-04-28 (+7d) | 2027-04-28 → 2027-05-05 (+7d) |  | 15d → 23d |
| 6 | **Backfilling** | 2027-04-29 → 2027-05-06 (+7d) | 2027-05-11 → 2027-05-24 (+13d) |  |  |
| SDR-2-CON-PW-ZA-3550 | Backfilling for Chambers & Valves | 2027-04-29 → 2027-05-06 (+7d) | 2027-05-11 → 2027-05-24 (+13d) |  | 15d → 23d |
| 7 | **PORTABLE WATER IN ( PH2-A-MCG0 )** | 2027-01-12 → 2026-10-22 (-82d) | 2027-05-29 → 2027-06-05 (+7d) |  |  |
| 7 | **Pipes Work** | 2027-01-12 → 2026-10-22 (-82d) | 2027-05-10 → 2027-05-23 (+13d) |  |  |
| 1 | **Excavation** | 2027-01-12 → 2026-10-22 (-82d) | 2027-03-02 → 2027-03-14 (+12d) |  |  |
| SDR-2-CON-PW-ZA-3870 | Excavation for PW HDPE Pipe 160 mm. Section 1 | 2027-01-12 → 2026-10-22 A (-82d) | 2027-02-04 → 2027-02-11 (+7d) | 0% → 25% | 3d → 5d |
| SDR-2-CON-PW-ZA-3560 | Excavation for PW HDPE Pipe 160 mm. Section 2 | 2027-02-06 → 2027-02-13 (+7d) | 2027-03-02 → 2027-03-14 (+12d) |  | 16d → 24d |
| 3 | **bedding Works** | 2027-03-03 → 2027-03-15 (+12d) | 2027-03-30 → 2027-04-06 (+7d) |  |  |
| SDR-2-CON-PW-ZA-3590 | Sand bedding for PW HDPE Pipe 160 mm. | 2027-03-03 → 2027-03-15 (+12d) | 2027-03-30 → 2027-04-06 (+7d) |  | 16d → 24d |
| 2 | **Pipes Laying** | 2027-03-31 → 2027-04-07 (+7d) | 2027-04-15 → 2027-04-22 (+7d) |  |  |
| SDR-2-CON-PW-ZA-3570 | Install PW 160 mm HDPE Pipe | 2027-03-31 → 2027-04-07 (+7d) | 2027-04-15 → 2027-04-22 (+7d) |  | 16d → 24d |
| 5 | **Testing** | 2027-04-17 → 2027-04-24 (+7d) | 2027-04-25 → 2027-05-02 (+7d) |  |  |
| SDR-2-CON-PW-ZA-3580 | Testing of PW HDPE Pipe 160 mm. | 2027-04-17 → 2027-04-24 (+7d) | 2027-04-25 → 2027-05-02 (+7d) |  | 16d → 24d |
| 4 | **Backfilling** | 2027-04-26 → 2027-05-03 (+7d) | 2027-05-10 → 2027-05-23 (+13d) |  |  |
| SDR-2-CON-PW-ZA-3600 | Backfilling of PW HDPE Pipe 160 mm. | 2027-04-26 → 2027-05-03 (+7d) | 2027-05-10 → 2027-05-23 (+13d) |  | 16d → 24d |
| 3 | **Valve Chambers & Valves & Fire Hydrant** | 2027-01-25 → 2027-02-01 (+7d) | 2027-05-29 → 2027-06-05 (+7d) |  |  |
| 3 | **Excavation** | 2027-01-25 → 2027-02-01 (+7d) | 2027-03-20 → 2027-03-27 (+7d) |  |  |
| SDR-2-CON-PW-ZA-3880 | Excavation for Valve Chambers Section 1 | 2027-01-25 → 2027-02-01 (+7d) | 2027-02-17 → 2027-02-25 (+8d) |  | 5d → 13d |
| SDR-2-CON-PW-ZA-3630 | Excavation for Valve Chambers Section 2 | 2027-02-18 → 2027-02-27 (+9d) | 2027-03-20 → 2027-03-27 (+7d) |  | 5d → 13d |
| 1 | **bedding Works** | 2027-03-21 → 2027-03-28 (+7d) | 2027-04-12 → 2027-04-19 (+7d) |  |  |
| SDR-2-CON-PW-ZA-3610 | Sand bedding for Valve Chambers | 2027-03-21 → 2027-03-28 (+7d) | 2027-04-12 → 2027-04-19 (+7d) |  | 5d → 13d |
| 4 | **Install Chambers & Valves & Fire Hydrant** | 2027-04-13 → 2027-04-20 (+7d) | 2027-05-02 → 2027-05-09 (+7d) |  |  |
| SDR-2-CON-PW-ZA-3640 | Install Chambers & Valves | 2027-04-13 → 2027-04-20 (+7d) | 2027-05-02 → 2027-05-09 (+7d) |  | 5d → 13d |
| 2 | **Testing** | 2027-05-03 → 2027-05-10 (+7d) | 2027-05-11 → 2027-05-24 (+13d) |  |  |
| SDR-2-CON-PW-ZA-3620 | Testing for Chambers & Valves | 2027-05-03 → 2027-05-10 (+7d) | 2027-05-11 → 2027-05-24 (+13d) |  | 5d → 13d |
| 6 | **Backfilling** | 2027-05-12 → 2027-05-25 (+13d) | 2027-05-29 → 2027-06-05 (+7d) |  |  |
| SDR-2-CON-PW-ZA-3650 | Backfilling for Chambers & Valves | 2027-05-12 → 2027-05-25 (+13d) | 2027-05-29 → 2027-06-05 (+7d) |  | 5d → 13d |
| 8 | **PORTABLE WATER IN ( PH2-A-MCH0 )** | 2027-01-16 → 2027-01-19 (+3d) | 2027-05-12 → 2027-05-22 (+10d) |  |  |
| 7 | **Pipes Work** | 2027-01-16 → 2027-01-19 (+3d) | 2027-05-12 → 2027-05-22 (+10d) |  |  |
| 1 | **Excavation** | 2027-01-16 → 2027-01-19 (+3d) | 2027-03-06 → 2027-03-14 (+8d) |  |  |
| SDR-2-CON-PW-ZA-3890 | Excavation for PW HDPE Pipe 225 mm. Section 1 | 2027-01-16 → 2027-01-19 (+3d) | 2027-02-08 → 2027-02-11 (+3d) |  | 3d → 5d |
| SDR-2-CON-PW-ZA-2810 | Excavation for PW HDPE Pipe 225 mm. Section 2 | 2027-02-09 → 2027-02-13 (+4d) | 2027-03-06 → 2027-03-14 (+8d) |  | 8d → 5d |
| 3 | **bedding Works** | 2027-03-07 → 2027-03-15 (+8d) | 2027-04-03 → 2027-04-06 (+3d) |  |  |
| SDR-2-CON-PW-ZA-2840 | Sand bedding for PW HDPE Pipe 225 mm. | 2027-03-07 → 2027-03-15 (+8d) | 2027-04-03 → 2027-04-06 (+3d) |  | 8d → 5d |
| 2 | **Pipes Laying** | 2027-04-04 → 2027-04-07 (+3d) | 2027-04-20 → 2027-04-24 (+4d) |  |  |
| SDR-2-CON-PW-ZA-2820 | Install PW 225 mm HDPE Pipe | 2027-04-04 → 2027-04-07 (+3d) | 2027-04-20 → 2027-04-24 (+4d) |  | 8d → 5d |
| 5 | **Testing** | 2027-04-21 → 2027-04-25 (+4d) | 2027-04-28 → 2027-05-02 (+4d) |  |  |
| SDR-2-CON-PW-ZA-2830 | Testing of PW HDPE Pipe 225 mm. | 2027-04-21 → 2027-04-25 (+4d) | 2027-04-28 → 2027-05-02 (+4d) |  | 8d → 5d |
| 4 | **Backfilling** | 2027-04-29 → 2027-05-03 (+4d) | 2027-05-12 → 2027-05-22 (+10d) |  |  |
| SDR-2-CON-PW-ZA-2850 | Backfilling of PW HDPE Pipe 225 mm. | 2027-04-29 → 2027-05-03 (+4d) | 2027-05-12 → 2027-05-22 (+10d) |  | 14d → 25d |
| 3 | **Valve Chambers & Valves & Fire Hydrant** | 2027-01-16 → 2027-01-19 (+3d) | 2027-05-12 → 2027-05-22 (+10d) |  |  |
| 3 | **Excavation** | 2027-01-16 → 2027-01-19 (+3d) | 2027-03-06 → 2027-03-14 (+8d) |  |  |
| SDR-2-CON-PW-ZA-3900 | Excavation for Valve Chambers Section 1 | 2027-01-16 → 2027-01-19 (+3d) | 2027-02-08 → 2027-02-11 (+3d) |  | 8d → 5d |
| SDR-2-CON-PW-ZA-2880 | Excavation for Valve Chambers Section 2 | 2027-02-09 → 2027-02-13 (+4d) | 2027-03-06 → 2027-03-14 (+8d) |  | 8d → 5d |
| 1 | **bedding Works** | 2027-03-07 → 2027-03-15 (+8d) | 2027-04-03 → 2027-04-06 (+3d) |  |  |
| SDR-2-CON-PW-ZA-2860 | Sand bedding for Valve Chambers | 2027-03-07 → 2027-03-15 (+8d) | 2027-04-03 → 2027-04-06 (+3d) |  | 8d → 5d |
| 4 | **Install Chambers & Valves & Fire Hydrant** | 2027-04-04 → 2027-04-07 (+3d) | 2027-04-20 → 2027-04-24 (+4d) |  |  |
| SDR-2-CON-PW-ZA-2890 | Install Chambers & Valves | 2027-04-04 → 2027-04-07 (+3d) | 2027-04-20 → 2027-04-24 (+4d) |  | 8d → 5d |
| 2 | **Testing** | 2027-04-21 → 2027-04-25 (+4d) | 2027-04-28 → 2027-05-02 (+4d) |  |  |
| SDR-2-CON-PW-ZA-2870 | Testing for Chambers & Valves | 2027-04-21 → 2027-04-25 (+4d) | 2027-04-28 → 2027-05-02 (+4d) |  | 8d → 5d |
| 6 | **Backfilling** | 2027-04-29 → 2027-05-03 (+4d) | 2027-05-12 → 2027-05-22 (+10d) |  |  |
| SDR-2-CON-PW-ZA-2900 | Backfilling for Chambers & Valves | 2027-04-29 → 2027-05-03 (+4d) | 2027-05-12 → 2027-05-22 (+10d) |  | 14d → 25d |
| 9 | **PORTABLE WATER IN ( PH2-ART-MC00 )** |  | 2027-05-13 → 2027-05-23 (+10d) |  |  |
| 7 | **Pipes Work** |  | 2027-04-19 → 2027-04-22 (+3d) |  |  |
| 1 | **Excavation** |  | 2027-02-11 → 2027-02-15 (+4d) |  |  |
| SDR-2-CON-PW-ZA-2360 | Excavation for PW HDPE Pipes 315 mm Section 2 |  | 2027-02-11 → 2027-02-15 (+4d) |  | 16d → 13d |
| 8 | **bedding Works** | 2027-02-13 → 2027-02-16 (+3d) | 2027-03-08 → 2027-03-16 (+8d) |  |  |

| ID | Task | Start | Finish | Total float |
| --- | --- | --- | --- | --- |
| SDR-2-CON-PW-ZA-2440 | Sand bedding for PW HDPE Pipes 315 mm | 2027-02-13 → 2027-02-16 (+3d) | 2027-03-08 → 2027-03-16 (+8d) | 16d → 13d |
| 2 | **Pipes Laying** | 2027-03-14 → 2027-03-17 (+3d) | 2027-04-01 → 2027-04-05 (+4d) |  |
| SDR-2-CON-PW-ZA-2370 | Install PW 315 mm HDPE Pipe | 2027-03-14 → 2027-03-17 (+3d) | 2027-04-01 → 2027-04-05 (+4d) | 16d → 13d |
| 5 | **Testing** | 2027-04-03 → 2027-04-06 (+3d) | 2027-04-10 → 2027-04-13 (+3d) |  |
| SDR-2-CON-PW-ZA-2430 | Testing of PW HDPE Pipe 315 mm. | 2027-04-03 → 2027-04-06 (+3d) | 2027-04-10 → 2027-04-13 (+3d) | 16d → 13d |
| 9 | **Backfilling** | 2027-04-11 → 2027-04-14 (+3d) | 2027-04-19 → 2027-04-22 (+3d) |  |
| SDR-2-CON-PW-ZA-2450 | Backfilling of PW HDPE Pipe 315 mm. | 2027-04-11 → 2027-04-14 (+3d) | 2027-04-19 → 2027-04-22 (+3d) | 16d → 13d |
| 3 | **Valve Chambers & Valves & Fire Hydrant** | 2027-01-19 → 2027-01-23 (+4d) | 2027-05-13 → 2027-05-23 (+10d) |  |
| 3 | **Excavation** | 2027-01-19 → 2027-01-23 (+4d) | 2027-03-14 → 2027-03-17 (+3d) |  |
| SDR-2-CON-PW-ZA-3920 | Excavation for Valve Chambers Section 1 | 2027-01-19 → 2027-01-23 (+4d) | 2027-02-11 → 2027-02-15 (+4d) | 3d → 24d |
| SDR-2-CON-PW-ZA-2400 | Excavation for Valve Chambers Section 2 | 2027-02-13 → 2027-02-16 (+3d) | 2027-03-14 → 2027-03-17 (+3d) | 3d → 24d |
| 1 | **bedding Works** | 2027-03-15 → 2027-03-18 (+3d) | 2027-04-06 → 2027-04-10 (+4d) |  |
| SDR-2-CON-PW-ZA-2380 | Sand bedding for Valve Chambers | 2027-03-15 → 2027-03-18 (+3d) | 2027-04-06 → 2027-04-10 (+4d) | 3d → 24d |
| 4 | **Install Chambers & Valves & Fire Hydrant** | 2027-04-07 → 2027-04-11 (+4d) | 2027-04-25 → 2027-04-28 (+3d) |  |
| SDR-2-CON-PW-ZA-2410 | Install Chambers & Valves | 2027-04-07 → 2027-04-11 (+4d) | 2027-04-25 → 2027-04-28 (+3d) | 3d → 24d |
| 2 | **Testing** | 2027-04-26 → 2027-04-29 (+3d) | 2027-05-04 → 2027-05-08 (+4d) |  |
| SDR-2-CON-PW-ZA-2390 | Testing for Chambers & Valves | 2027-04-26 → 2027-04-29 (+3d) | 2027-05-04 → 2027-05-08 (+4d) | 3d → 24d |
| 6 | **Backfilling** | 2027-05-05 → 2027-05-09 (+4d) | 2027-05-13 → 2027-05-23 (+10d) |  |
| SDR-2-CON-PW-ZA-2420 | Backfilling for Chambers & Valves | 2027-05-05 → 2027-05-09 (+4d) | 2027-05-13 → 2027-05-23 (+10d) | 13d → 24d |
| 10 | **PORTABLE WATER IN ( PH2-ART-MC10 )** |  | 2027-05-30 → 2027-06-06 (+7d) |  |
| 7 | **Pipes Work** |  | 2027-05-30 → 2027-06-06 (+7d) |  |
| 1 | **Excavation** |  | 2027-02-11 → 2027-02-15 (+4d) |  |
| SDR-2-CON-PW-ZA-3930 | Excavation for PW HDPE Pipes 315 mm Section 1 |  | 2027-01-18 → 2027-01-21 (+3d) | 26d → 23d |
| SDR-2-CON-PW-ZA-2460 | Excavation for PW HDPE Pipes 315 mm Section 2 |  | 2027-02-11 → 2027-02-15 (+4d) | 26d → 23d |
| 8 | **bedding Works** |  | 2027-03-08 → 2027-03-16 (+8d) |  |
| SDR-2-CON-PW-ZA-2540 | Sand bedding for PW HDPE Pipes 315 mm |  | 2027-03-08 → 2027-03-16 (+8d) | 26d → 23d |
| 2 | **Pipes Laying** |  | 2027-03-30 → 2027-04-03 (+4d) |  |
| SDR-2-CON-PW-ZA-2470 | Install PW 315 mm HDPE Pipe |  | 2027-03-30 → 2027-04-03 (+4d) | 26d → 23d |
| 5 | **Testing** | 2027-03-31 → 2027-04-04 (+4d) | 2027-04-07 → 2027-04-11 (+4d) |  |
| SDR-2-CON-PW-ZA-2530 | Testing of PW HDPE Pipe 315 mm. | 2027-03-31 → 2027-04-04 (+4d) | 2027-04-07 → 2027-04-11 (+4d) | 26d → 23d |
| 9 | **Backfilling** | 2027-05-13 → 2027-05-26 (+13d) | 2027-05-30 → 2027-06-06 (+7d) |  |
| SDR-2-CON-PW-ZA-2550 | Backfilling of PW HDPE Pipe 315 mm. | 2027-05-13 → 2027-05-26 (+13d) | 2027-05-30 → 2027-06-06 (+7d) | 4d → 12d |
| 3 | **Valve Chambers & Valves & Fire Hydrant** | 2027-01-19 → 2027-01-26 (+7d) | 2027-05-15 → 2027-05-27 (+12d) |  |
| 3 | **Excavation** | 2027-01-19 → 2027-01-26 (+7d) | 2027-03-15 → 2027-03-22 (+7d) |  |
| SDR-2-CON-PW-ZA-3940 | Excavation for Valve Chambers Section 1 | 2027-01-19 → 2027-01-26 (+7d) | 2027-02-13 → 2027-02-20 (+7d) | 4.74d → 20.74d |
| SDR-2-CON-PW-ZA-2500 | Excavation for Valve Chambers Section 2 | 2027-02-13 → 2027-02-20 (+7d) | 2027-03-15 → 2027-03-22 (+7d) | 4.74d → 20.74d |
| 1 | **bedding Works** | 2027-03-15 → 2027-03-22 (+7d) | 2027-04-07 → 2027-04-14 (+7d) |  |
| SDR-2-CON-PW-ZA-2480 | Sand bedding for Valve Chambers | 2027-03-15 → 2027-03-22 (+7d) | 2027-04-07 → 2027-04-14 (+7d) | 4.74d → 20.74d |
| 4 | **Install Chambers & Valves & Fire Hydrant** | 2027-04-07 → 2027-04-14 (+7d) | 2027-04-24 → 2027-05-01 (+7d) |  |
| SDR-2-CON-PW-ZA-2510 | Install Chambers & Valves | 2027-04-07 → 2027-04-14 (+7d) | 2027-04-24 → 2027-05-01 (+7d) | 4.74d → 20.74d |
| 2 | **Testing** | 2027-04-24 → 2027-05-01 (+7d) | 2027-05-03 → 2027-05-10 (+7d) |  |
| SDR-2-CON-PW-ZA-2490 | Testing for Chambers & Valves | 2027-04-24 → 2027-05-01 (+7d) | 2027-05-03 → 2027-05-10 (+7d) | 4.74d → 20.74d |
| 6 | **Backfilling** | 2027-05-03 → 2027-05-10 (+7d) | 2027-05-15 → 2027-05-27 (+12d) |  |
| SDR-2-CON-PW-ZA-2520 | Backfilling for Chambers & Valves | 2027-05-03 → 2027-05-10 (+7d) | 2027-05-15 → 2027-05-27 (+12d) | 12.74d → 20.74d |
| ZG | **ZONE G** |  | 2027-05-09 → 2027-05-22 (+13d) |  |
| 1 | **PORTABLE WATER IN ( PH2-G-MCA0 )** |  | 2027-02-07 → 2027-02-14 (+7d) |  |
| 7 | **Pipes Work** |  | 2026-11-14 → 2026-11-21 (+7d) |  |
| 3 | **bedding Works** |  | 2026-10-19 → 2026-10-26 (+7d) |  |
| SDR-2-CON-PW-ZG-1500 | Sand bedding for PW HDPE Pipes 400 mm |  | 2026-10-19 → 2026-10-26 (+7d) | 145d → 139d |
| 2 | **Pipes Laying** |  | 2026-10-19 → 2026-10-26 (+7d) |  |
| SDR-2-CON-PW-ZG-1010 | Install PW 400 mm HDPE Pipe |  | 2026-10-19 → 2026-10-26 (+7d) | 145d → 139d |
| 5 | **Testing** | 2026-10-20 → 2026-10-27 (+7d) | 2026-10-31 → 2026-11-07 (+7d) |  |
| SDR-2-CON-PW-ZG-1080 | Testing of PW HDPE Pipe 400 mm. | 2026-10-20 → 2026-10-27 (+7d) | 2026-10-31 → 2026-11-07 (+7d) | 145d → 139d |
| 4 | **Backfilling** | 2026-11-01 → 2026-11-08 (+7d) | 2026-11-14 → 2026-11-21 (+7d) |  |
| SDR-2-CON-PW-ZG-1510 | Backfilling of PW HDPE Pipe 400 mm. | 2026-11-01 → 2026-11-08 (+7d) | 2026-11-14 → 2026-11-21 (+7d) | 145d → 139d |
| 3 | **Valve Chambers & Valves & Fire Hydrant** | 2026-10-19 → 2026-10-26 (+7d) | 2027-02-07 → 2027-02-14 (+7d) |  |
| 3 | **Excavation** | 2026-10-19 → 2026-10-26 (+7d) | 2026-12-06 → 2026-12-13 (+7d) |  |
| SDR-2-CON-PW-ZA-3950 | Excavation for Valve Chambers Section 1 | 2026-10-19 → 2026-10-26 (+7d) | 2026-11-11 → 2026-11-18 (+7d) | 72d → 66d |
| SDR-2-CON-PW-ZA-3680 | Excavation for Valve Chambers Section 2 | 2026-11-12 → 2026-11-19 (+7d) | 2026-12-06 → 2026-12-13 (+7d) | 72d → 66d |
| 1 | **bedding Works** | 2026-12-07 → 2026-12-14 (+7d) | 2026-12-27 → 2027-01-03 (+7d) |  |
| SDR-2-CON-PW-ZA-3660 | Sand bedding for Valve Chambers | 2026-12-07 → 2026-12-14 (+7d) | 2026-12-27 → 2027-01-03 (+7d) | 72d → 66d |
| 4 | **Install Chambers & Valves & Fire Hydrant** | 2026-12-28 → 2027-01-04 (+7d) | 2027-01-14 → 2027-01-21 (+7d) |  |
| SDR-2-CON-PW-ZA-3690 | Install Chambers & Valves | 2026-12-28 → 2027-01-04 (+7d) | 2027-01-14 → 2027-01-21 (+7d) | 72d → 66d |
| 2 | **Testing** | 2027-01-16 → 2027-01-23 (+7d) | 2027-01-26 → 2027-02-02 (+7d) |  |
| SDR-2-CON-PW-ZA-3670 | Testing for Chambers & Valves | 2027-01-16 → 2027-01-23 (+7d) | 2027-01-26 → 2027-02-02 (+7d) | 72d → 66d |
| 6 | **Backfilling** | 2027-01-27 → 2027-02-03 (+7d) | 2027-02-07 → 2027-02-14 (+7d) |  |
| SDR-2-CON-PW-ZA-3700 | Backfilling for Chambers & Valves | 2027-01-27 → 2027-02-03 (+7d) | 2027-02-07 → 2027-02-14 (+7d) | 72d → 66d |
| 2 | **PORTABLE WATER IN ( PH2-G-MCE0 )** |  | 2027-05-09 → 2027-05-22 (+13d) |  |
| 7 | **Pipes Work** |  | 2026-11-11 → 2026-11-18 (+7d) |  |
| 3 | **bedding Works** |  | 2026-10-19 → 2026-10-26 (+7d) |  |

| ID | Task | Start | Finish | Total float |
| --- | --- | --- | --- | --- |
| SDR-2-CON-PW-ZA-2940 | Sand bedding for PW HDPE Pipe 225 mm. |  | 2026-10-19 → 2026-10-26 (+7d) | 147d → 141d |
| 2 | **Pipes Laying** |  | 2026-10-19 → 2026-10-26 (+7d) |  |
| SDR-2-CON-PW-ZA-2920 | Install PW 225 mm HDPE Pipe |  | 2026-10-19 → 2026-10-26 (+7d) | 147d → 141d |
| 5 | **Testing** | 2026-10-20 → 2026-10-27 (+7d) | 2026-10-27 → 2026-11-03 (+7d) |  |
| SDR-2-CON-PW-ZA-2930 | Testing of PW HDPE Pipe 225 mm. | 2026-10-20 → 2026-10-27 (+7d) | 2026-10-27 → 2026-11-03 (+7d) | 147d → 141d |
| 4 | **Backfilling** | 2026-10-28 → 2026-11-04 (+7d) | 2026-11-11 → 2026-11-18 (+7d) |  |
| SDR-2-CON-PW-ZA-2950 | Backfilling of PW HDPE Pipe 225 mm. | 2026-10-28 → 2026-11-04 (+7d) | 2026-11-11 → 2026-11-18 (+7d) | 147d → 141d |
| 3 | **Valve Chambers & Valves & Fire Hydrant** | 2027-01-09 → 2027-01-16 (+7d) | 2027-05-09 → 2027-05-22 (+13d) |  |
| 3 | **Excavation** | 2027-01-09 → 2027-01-16 (+7d) | 2027-02-27 → 2027-03-06 (+7d) |  |
| SDR-2-CON-PW-ZA-3970 | Excavation for Valve Chambers Section 1 | 2027-01-09 → 2027-01-16 (+7d) | 2027-02-01 → 2027-02-08 (+7d) | 11d → 5d |
| SDR-2-CON-PW-ZA-2980 | Excavation for Valve Chambers Section 2 | 2027-02-02 → 2027-02-09 (+7d) | 2027-02-27 → 2027-03-06 (+7d) | 11d → 5d |
| 1 | **bedding Works** | 2027-02-28 → 2027-03-07 (+7d) | 2027-03-24 → 2027-03-31 (+7d) |  |
| SDR-2-CON-PW-ZA-2960 | Sand bedding for Valve Chambers | 2027-02-28 → 2027-03-07 (+7d) | 2027-03-24 → 2027-03-31 (+7d) | 11d → 5d |
| 4 | **Install Chambers & Valves & Fire Hydrant** | 2027-03-25 → 2027-04-01 (+7d) | 2027-04-13 → 2027-04-20 (+7d) |  |
| SDR-2-CON-PW-ZA-2990 | Install Chambers & Valves | 2027-03-25 → 2027-04-01 (+7d) | 2027-04-13 → 2027-04-20 (+7d) | 11d → 5d |
| 2 | **Testing** | 2027-04-14 → 2027-04-21 (+7d) | 2027-04-25 → 2027-05-02 (+7d) |  |
| SDR-2-CON-PW-ZA-2970 | Testing for Chambers & Valves | 2027-04-14 → 2027-04-21 (+7d) | 2027-04-25 → 2027-05-02 (+7d) | 11d → 5d |
| 6 | **Backfilling** | 2027-04-26 → 2027-05-03 (+7d) | 2027-05-09 → 2027-05-22 (+13d) |  |
| SDR-2-CON-PW-ZA-3000 | Backfilling for Chambers & Valves | 2027-04-26 → 2027-05-03 (+7d) | 2027-05-09 → 2027-05-22 (+13d) | 17d → 25d |
| 3 | **PORTABLE WATER IN ( PH2-G-MCF0 )** |  | 2027-04-27 → 2027-05-04 (+7d) |  |
| 7 | **Pipes Work** |  | 2027-01-19 → 2027-01-26 (+7d) |  |
| 3 | **bedding Works** |  | 2026-12-21 → 2026-12-28 (+7d) |  |
| SDR-2-CON-PW-ZA-3040 | Sand bedding for PW HDPE Pipe 225 mm. |  | 2026-12-21 → 2026-12-28 (+7d) | 88d → 82d |
| 5 | **Testing** | 2026-12-21 → 2026-12-28 (+7d) | 2026-12-29 → 2027-01-05 (+7d) |  |
| SDR-2-CON-PW-ZA-3030 | Testing of PW HDPE Pipe 225 mm. | 2026-12-21 → 2026-12-28 (+7d) | 2026-12-29 → 2027-01-05 (+7d) | 88d → 82d |
| 4 | **Backfilling** | 2026-12-30 → 2027-01-06 (+7d) | 2027-01-19 → 2027-01-26 (+7d) |  |
| SDR-2-CON-PW-ZA-3050 | Backfilling of PW HDPE Pipe 225 mm. | 2026-12-30 → 2027-01-06 (+7d) | 2027-01-19 → 2027-01-26 (+7d) | 88d → 82d |
| 3 | **Valve Chambers & Valves & Fire Hydrant** | 2026-12-21 → 2026-12-28 (+7d) | 2027-04-27 → 2027-05-04 (+7d) |  |
| 3 | **Excavation** | 2026-12-21 → 2026-12-28 (+7d) | 2027-02-07 → 2027-02-14 (+7d) |  |
| SDR-2-CON-PW-ZA-3990 | Excavation for Valve Chambers Section 1 | 2026-12-21 → 2026-12-28 (+7d) | 2027-01-13 → 2027-01-20 (+7d) | 9d → 3d |
| SDR-2-CON-PW-ZA-3080 | Excavation for Valve Chambers Section 2 | 2027-01-14 → 2027-01-21 (+7d) | 2027-02-07 → 2027-02-14 (+7d) | 9d → 3d |
| 1 | **bedding Works** | 2027-02-08 → 2027-02-15 (+7d) | 2027-03-03 → 2027-03-15 (+12d) |  |
| SDR-2-CON-PW-ZA-3060 | Sand bedding for Valve Chambers | 2027-02-08 → 2027-02-15 (+7d) | 2027-03-03 → 2027-03-15 (+12d) | 9d → 3d |
| 4 | **Install Chambers & Valves & Fire Hydrant** | 2027-03-04 → 2027-03-16 (+12d) | 2027-03-30 → 2027-04-06 (+7d) |  |
| SDR-2-CON-PW-ZA-3090 | Install Chambers & Valves | 2027-03-04 → 2027-03-16 (+12d) | 2027-03-30 → 2027-04-06 (+7d) | 9d → 3d |
| 2 | **Testing** | 2027-03-31 → 2027-04-07 (+7d) | 2027-04-08 → 2027-04-15 (+7d) |  |
| SDR-2-CON-PW-ZA-3070 | Testing for Chambers & Valves | 2027-03-31 → 2027-04-07 (+7d) | 2027-04-08 → 2027-04-15 (+7d) | 9d → 3d |
| 6 | **Backfilling** | 2027-04-10 → 2027-04-17 (+7d) | 2027-04-27 → 2027-05-04 (+7d) |  |
| SDR-2-CON-PW-ZA-3100 | Backfilling for Chambers & Valves | 2027-04-10 → 2027-04-17 (+7d) | 2027-04-27 → 2027-05-04 (+7d) | 9d → 3d |
| 4 | **PORTABLE WATER IN ( PH2-G-MCG0 )** |  | 2027-02-10 → 2027-02-17 (+7d) |  |
| 7 | **Pipes Work** |  | 2026-11-16 → 2026-11-23 (+7d) |  |
| 3 | **bedding Works** |  | 2026-10-19 → 2026-10-26 (+7d) |  |
| SDR-2-CON-PW-ZA-3140 | Sand bedding for PW HDPE Pipe 225 mm. |  | 2026-10-19 → 2026-10-26 (+7d) | 143d → 137d |
| 5 | **Testing** | 2026-10-19 → 2026-10-26 (+7d) | 2026-10-27 → 2026-11-03 (+7d) |  |
| SDR-2-CON-PW-ZA-3130 | Testing of PW HDPE Pipe 225 mm. | 2026-10-19 → 2026-10-26 (+7d) | 2026-10-27 → 2026-11-03 (+7d) | 143d → 137d |
| 4 | **Backfilling** | 2026-10-28 → 2026-11-04 (+7d) | 2026-11-16 → 2026-11-23 (+7d) |  |
| SDR-2-CON-PW-ZA-3150 | Backfilling of PW HDPE Pipe 225 mm. | 2026-10-28 → 2026-11-04 (+7d) | 2026-11-16 → 2026-11-23 (+7d) | 143d → 137d |
| 3 | **Valve Chambers & Valves & Fire Hydrant** | 2026-10-19 → 2026-10-26 (+7d) | 2027-02-10 → 2027-02-17 (+7d) |  |
| 3 | **Excavation** | 2026-10-19 → 2026-10-26 (+7d) | 2026-12-06 → 2026-12-13 (+7d) |  |
| SDR-2-CON-PW-ZA-4010 | Excavation for Valve Chambers Section 1 | 2026-10-19 → 2026-10-26 (+7d) | 2026-11-11 → 2026-11-18 (+7d) | 69d → 63d |
| SDR-2-CON-PW-ZA-3180 | Excavation for Valve Chambers Section 2 | 2026-11-12 → 2026-11-19 (+7d) | 2026-12-06 → 2026-12-13 (+7d) | 69d → 63d |
| 1 | **bedding Works** | 2026-12-07 → 2026-12-14 (+7d) | 2026-12-27 → 2027-01-03 (+7d) |  |
| SDR-2-CON-PW-ZA-3160 | Sand bedding for Valve Chambers | 2026-12-07 → 2026-12-14 (+7d) | 2026-12-27 → 2027-01-03 (+7d) | 69d → 63d |
| 4 | **Install Chambers & Valves & Fire Hydrant** | 2026-12-28 → 2027-01-04 (+7d) | 2027-01-12 → 2027-01-19 (+7d) |  |
| SDR-2-CON-PW-ZA-3190 | Install Chambers & Valves | 2026-12-28 → 2027-01-04 (+7d) | 2027-01-12 → 2027-01-19 (+7d) | 69d → 63d |
| 2 | **Testing** | 2027-01-13 → 2027-01-20 (+7d) | 2027-01-21 → 2027-01-28 (+7d) |  |
| SDR-2-CON-PW-ZA-3170 | Testing for Chambers & Valves | 2027-01-13 → 2027-01-20 (+7d) | 2027-01-21 → 2027-01-28 (+7d) | 69d → 63d |
| 6 | **Backfilling** | 2027-01-23 → 2027-01-30 (+7d) | 2027-02-10 → 2027-02-17 (+7d) |  |
| SDR-2-CON-PW-ZA-3200 | Backfilling for Chambers & Valves | 2027-01-23 → 2027-01-30 (+7d) | 2027-02-10 → 2027-02-17 (+7d) | 69d → 63d |
| 5 | **PORTABLE WATER IN ( PH2-G-MCZ0 )** |  | 2027-02-11 → 2027-02-18 (+7d) |  |
| 7 | **Pipes Work** |  | 2026-11-15 → 2026-11-22 (+7d) |  |
| 8 | **bedding Works** |  | 2026-10-19 → 2026-10-26 (+7d) |  |
| SDR-2-CON-PW-ZA-2640 | Sand bedding for PW HDPE Pipes 315 mm |  | 2026-10-19 → 2026-10-26 (+7d) | 144d → 138d |
| 2 | **Pipes Laying** |  | 2026-10-19 → 2026-10-26 (+7d) |  |
| SDR-2-CON-PW-ZA-2570 | Install PW 315 mm HDPE Pipe |  | 2026-10-19 → 2026-10-26 (+7d) | 144d → 138d |
| 5 | **Testing** | 2026-10-20 → 2026-10-27 (+7d) | 2026-10-26 → 2026-11-02 (+7d) |  |
| SDR-2-CON-PW-ZA-2630 | Testing of PW HDPE Pipe 315 mm. | 2026-10-20 → 2026-10-27 (+7d) | 2026-10-26 → 2026-11-02 (+7d) | 144d → 138d |
| 9 | **Backfilling** | 2026-10-27 → 2026-11-03 (+7d) | 2026-11-15 → 2026-11-22 (+7d) |  |
| SDR-2-CON-PW-ZA-2650 | Backfilling of PW HDPE Pipe 315 mm. | 2026-10-27 → 2026-11-03 (+7d) | 2026-11-15 → 2026-11-22 (+7d) | 144d → 138d |
| 3 | **Valve Chambers & Valves & Fire Hydrant** | 2026-10-19 → 2026-10-26 (+7d) | 2027-02-11 → 2027-02-18 (+7d) |  |

| ID | Task | Start | Finish | Complete | Total float |
| --- | --- | --- | --- | --- | --- |
| 3 | **Excavation** | 2026-10-19 → 2026-10-26 (+7d) | 2026-12-06 → 2026-12-13 (+7d) |  |  |
| SDR-2-CON-PW-ZA-4030 | Excavation for Valve Chambers Section 1 | 2026-10-19 → 2026-10-26 (+7d) | 2026-11-11 → 2026-11-18 (+7d) |  | 68d → 62d |
| SDR-2-CON-PW-ZA-2600 | Excavation for Valve Chambers Section 2 | 2026-11-12 → 2026-11-19 (+7d) | 2026-12-06 → 2026-12-13 (+7d) |  | 68d → 62d |
| 1 | **bedding Works** | 2026-12-07 → 2026-12-14 (+7d) | 2026-12-28 → 2027-01-04 (+7d) |  |  |
| SDR-2-CON-PW-ZA-2580 | Sand bedding for Valve Chambers | 2026-12-07 → 2026-12-14 (+7d) | 2026-12-28 → 2027-01-04 (+7d) |  | 68d → 62d |
| 4 | **Install Chambers & Valves & Fire Hydrant** | 2026-12-29 → 2027-01-05 (+7d) | 2027-01-16 → 2027-01-23 (+7d) |  |  |
| SDR-2-CON-PW-ZA-2610 | Install Chambers & Valves | 2026-12-29 → 2027-01-05 (+7d) | 2027-01-16 → 2027-01-23 (+7d) |  | 68d → 62d |
| 2 | **Testing** | 2027-01-17 → 2027-01-24 (+7d) | 2027-01-23 → 2027-01-30 (+7d) |  |  |
| SDR-2-CON-PW-ZA-2590 | Testing for Chambers & Valves | 2027-01-17 → 2027-01-24 (+7d) | 2027-01-23 → 2027-01-30 (+7d) |  | 68d → 62d |
| 6 | **Backfilling** | 2027-01-24 → 2027-01-31 (+7d) | 2027-02-11 → 2027-02-18 (+7d) |  |  |
| SDR-2-CON-PW-ZA-2620 | Backfilling for Chambers & Valves | 2027-01-24 → 2027-01-31 (+7d) | 2027-02-11 → 2027-02-18 (+7d) |  | 68d → 62d |
| EW | **Electrical Works** |  | 2027-03-16 → 2027-03-23 (+7d) |  |  |
| ZA | **ZONE A** |  | 2027-03-16 → 2027-03-23 (+7d) |  |  |
| 1 | **Street Lighting Network** |  | 2027-03-16 → 2027-03-23 (+7d) |  |  |
| 16 | **Street Lighting Network IN ( PH2-COL-MC10 )** |  | 2027-03-04 → 2027-03-16 (+12d) |  |  |
| 10 | **Excavation** |  | 2026-10-19 → 2026-10-26 (+7d) |  |  |
| SDR-2-CON-SL-ZA-1000 | Excavation for LV Cable Trenches |  | 2026-10-19 → 2026-10-26 (+7d) |  | 3d → 5d |
| 11 | **Install Footings** |  | 2026-12-27 → 2027-01-03 (+7d) |  |  |
| SDR-2-CON-SL-ZA-1010 | Install Footings |  | 2026-12-27 → 2027-01-03 (+7d) | 30% → 35% | 7d → 1d |
| 12 | **Backfilling** | 2026-12-28 → 2027-01-04 (+7d) | 2027-01-20 → 2027-01-27 (+7d) |  |  |
| SDR-2-CON-SL-ZA-1110 | Backfilling over LV Cables of Street lighting | 2026-12-28 → 2027-01-04 (+7d) | 2027-01-20 → 2027-01-27 (+7d) |  | 7d → 1d |
| 13 | **Install pole** | 2027-02-08 → 2027-02-15 (+7d) | 2027-03-04 → 2027-03-16 (+12d) |  |  |
| SDR-2-CON-SL-ZA-1100 | Install Pole | 2027-02-08 → 2027-02-15 (+7d) | 2027-03-04 → 2027-03-16 (+12d) |  | 7d → 1d |
| 17 | **Street Lighting Network IN ( PH2-COL-MC20 )** |  | 2027-01-30 → 2027-02-06 (+7d) |  |  |
| 10 | **Excavation** |  | 2026-10-19 → 2026-10-26 (+7d) |  |  |
| SDR-2-CON-SL-ZA-2870 | Excavation for LV Cable Trenches |  | 2026-10-19 → 2026-10-26 (+7d) |  | 66d → 60d |
| 11 | **Install Footings** |  | 2026-11-24 → 2026-12-01 (+7d) |  |  |
| SDR-2-CON-SL-ZA-2880 | Install Footings |  | 2026-11-24 → 2026-12-01 (+7d) | 35% → 40% | 35d → 29d |
| 12 | **Backfilling** | 2026-11-25 → 2026-12-02 (+7d) | 2026-12-19 → 2026-12-26 (+7d) |  |  |
| SDR-2-CON-SL-ZA-2900 | Backfilling over LV Cables of Street lighting | 2026-11-25 → 2026-12-02 (+7d) | 2026-12-19 → 2026-12-26 (+7d) |  | 35d → 29d |
| 13 | **Install pole** | 2027-01-06 → 2027-01-13 (+7d) | 2027-01-30 → 2027-02-06 (+7d) |  |  |
| SDR-2-CON-SL-ZA-2890 | Install Pole | 2027-01-06 → 2027-01-13 (+7d) | 2027-01-30 → 2027-02-06 (+7d) |  | 35d → 29d |
| 18 | **Street Lighting Network IN ( PH2-A-MCA0 )** |  | 2027-01-02 → 2027-01-09 (+7d) |  |  |
| 10 | **Excavation** |  | 2026-10-19 → 2026-10-26 (+7d) |  |  |
| SDR-2-CON-SL-ZA-3610 | Excavation for LV Cable Drawpits |  | 2026-10-19 → 2026-10-26 (+7d) |  | 11d → 5d |
| SDR-2-CON-SL-ZA-1300 | Excavation for LV Cable Trenches |  | 2026-10-19 → 2026-10-26 (+7d) |  | 54d → 49d |
| 11 | **Install Footings** |  | 2026-11-21 → 2026-11-28 (+7d) |  |  |
| SDR-2-CON-SL-ZA-1310 | Install Footings |  | 2026-11-21 → 2026-11-28 (+7d) | 35% → 40% | 26d → 21d |
| 12 | **Backfilling** | 2026-11-15 → 2026-11-22 (+7d) | 2026-12-08 → 2026-12-15 (+7d) |  |  |
| SDR-2-CON-SL-ZA-1410 | Backfilling over LV Cables of Street lighting | 2026-11-15 → 2026-11-22 (+7d) | 2026-12-08 → 2026-12-15 (+7d) |  | 26d → 21d |
| 13 | **Install pole** | 2026-12-09 → 2026-12-16 (+7d) | 2027-01-02 → 2027-01-09 (+7d) |  |  |
| SDR-2-CON-SL-ZA-1400 | Install Pole | 2026-12-09 → 2026-12-16 (+7d) | 2027-01-02 → 2027-01-09 (+7d) |  | 26d → 21d |
| 19 | **Street Lighting Network IN ( PH2-A-MCB0 )** |  | 2026-12-21 → 2026-12-28 (+7d) |  |  |
| 10 | **Excavation** |  | 2026-10-19 → 2026-10-26 (+7d) |  |  |
| SDR-2-CON-SL-ZA-3620 | Excavation for LV Cable Drawpits |  | 2026-10-19 → 2026-10-26 (+7d) | 75% → 80% | 11d → 5d |
| SDR-2-CON-SL-ZA-2950 | Excavation for LV Cable Trenches |  | 2026-10-19 → 2026-10-26 (+7d) |  | 11d → 5d |
| 11 | **Install Footings** |  | 2026-10-21 → 2026-10-28 (+7d) |  |  |
| SDR-2-CON-SL-ZA-2960 | Install Footings |  | 2026-10-21 → 2026-10-28 (+7d) | 35% → 40% | 9d → 3d |
| 12 | **Backfilling** | 2026-10-22 → 2026-10-29 (+7d) | 2026-11-15 → 2026-11-22 (+7d) |  |  |
| SDR-2-CON-SL-ZA-2980 | Backfilling over LV Cables of Street lighting | 2026-10-22 → 2026-10-29 (+7d) | 2026-11-15 → 2026-11-22 (+7d) |  | 9d → 3d |
| 13 | **Install pole** | 2026-11-28 → 2026-12-05 (+7d) | 2026-12-21 → 2026-12-28 (+7d) |  |  |
| SDR-2-CON-SL-ZA-2970 | Install Pole | 2026-11-28 → 2026-12-05 (+7d) | 2026-12-21 → 2026-12-28 (+7d) |  | 9d → 3d |
| 20 | **Street Lighting Network IN ( PH2-A-MCC0 )** |  | 2026-12-30 → 2027-01-06 (+7d) |  |  |
| 10 | **Excavation** |  | 2026-10-19 → 2026-10-26 (+7d) |  |  |
| SDR-2-CON-SL-ZA-3630 | Excavation for LV Cable Drawpits |  | 2026-10-19 → 2026-10-26 (+7d) |  | 28d → 22d |
| SDR-2-CON-SL-ZA-2990 | Excavation for LV Cable Trenches |  | 2026-10-19 → 2026-10-26 (+7d) |  | 54d → 48d |
| 11 | **Install Footings** |  | 2026-10-25 → 2026-11-01 (+7d) |  |  |
| SDR-2-CON-SL-ZA-3000 | Install Footings |  | 2026-10-25 → 2026-11-01 (+7d) | 35% → 40% | 49d → 43d |
| 12 | **Backfilling** | 2026-10-26 → 2026-11-02 (+7d) | 2026-11-18 → 2026-11-25 (+7d) |  |  |
| SDR-2-CON-SL-ZA-3020 | Backfilling over LV Cables of Street lighting | 2026-10-26 → 2026-11-02 (+7d) | 2026-11-18 → 2026-11-25 (+7d) |  | 49d → 43d |
| 13 | **Install pole** | 2026-12-07 → 2026-12-14 (+7d) | 2026-12-30 → 2027-01-06 (+7d) |  |  |
| SDR-2-CON-SL-ZA-3010 | Install Pole | 2026-12-07 → 2026-12-14 (+7d) | 2026-12-30 → 2027-01-06 (+7d) |  | 49d → 43d |
| 21 | **Street Lighting Network IN ( PH2-A-MCD0 )** |  | 2027-03-16 → 2027-03-23 (+7d) |  |  |
| 10 | **Excavation** |  | 2026-10-19 → 2026-10-26 (+7d) |  |  |
| SDR-2-CON-SL-ZA-3640 | Excavation for LV Cable Drawpits |  | 2026-10-19 → 2026-10-26 (+7d) |  | 28d → 22d |
| SDR-2-CON-SL-ZA-3030 | Excavation for LV Cable Trenches |  | 2026-10-19 → 2026-10-26 (+7d) |  | 75d → 69d |
| 11 | **Install Footings** |  | 2026-10-25 → 2026-11-01 (+7d) |  |  |
| SDR-2-CON-SL-ZA-3040 | Install Footings |  | 2026-10-25 → 2026-11-01 (+7d) | 40% → 45% | 70d → 64d |
| 12 | **Backfilling** | 2026-10-26 → 2026-11-02 (+7d) | 2026-11-18 → 2026-11-25 (+7d) |  |  |
| SDR-2-CON-SL-ZA-3060 | Backfilling over LV Cables of Street lighting | 2026-10-26 → 2026-11-02 (+7d) | 2026-11-18 → 2026-11-25 (+7d) |  | 70d → 64d |

| ID | Task | Start | Finish | Total float |
| --- | --- | --- | --- | --- |
| 13 | **Install pole** | 2027-02-15 → 2027-02-23 (+8d) | 2027-03-16 → 2027-03-23 (+7d) |  |
| SDR-2-CON-SL-ZA-3050 | Install Pole | 2027-02-15 → 2027-02-23 (+8d) | 2027-03-16 → 2027-03-23 (+7d) | 10d → 4d |
| 22 | **Street Lighting Network IN ( PH2-A-MCE0 )** |  | 2026-12-28 → 2027-01-04 (+7d) |  |
| 10 | **Excavation** |  | 2026-10-19 → 2026-10-26 (+7d) |  |
| SDR-2-CON-SL-ZA-3650 | Excavation for LV Cable Drawpits |  | 2026-10-19 → 2026-10-26 (+7d) | 28d → 22d |
| SDR-2-CON-SL-ZA-3070 | Excavation for LV Cable Trenches |  | 2026-10-19 → 2026-10-26 (+7d) | 95d → 89d |
| 11 | **Install Footings** |  | 2026-10-25 → 2026-11-01 (+7d) |  |
| SDR-2-CON-SL-ZA-3080 | Install Footings |  | 2026-10-25 → 2026-11-01 (+7d) | 90d → 84d |
| 12 | **Backfilling** | 2026-10-26 → 2026-11-02 (+7d) | 2026-11-18 → 2026-11-25 (+7d) |  |
| SDR-2-CON-SL-ZA-3100 | Backfilling over LV Cables of Street lighting | 2026-10-26 → 2026-11-02 (+7d) | 2026-11-18 → 2026-11-25 (+7d) | 90d → 84d |
| 13 | **Install pole** | 2026-12-07 → 2026-12-14 (+7d) | 2026-12-28 → 2027-01-04 (+7d) |  |
| SDR-2-CON-SL-ZA-3090 | Install Pole | 2026-12-07 → 2026-12-14 (+7d) | 2026-12-28 → 2027-01-04 (+7d) | 90d → 84d |
| 23 | **Street Lighting Network IN ( PH2-A-MCF0 )** |  | 2027-01-02 → 2027-01-09 (+7d) |  |
| 10 | **Excavation** |  | 2026-10-28 → 2026-11-04 (+7d) |  |
| SDR-2-CON-SL-ZA-3660 | Excavation for LV Cable Drawpits |  | 2026-10-28 → 2026-11-04 (+7d) | 20d → 14d |
| SDR-2-CON-SL-ZA-3110 | Excavation for LV Cable Trenches |  | 2026-10-28 → 2026-11-04 (+7d) | 20d → 14d |
| 11 | **Install Footings** |  | 2026-10-28 → 2026-11-04 (+7d) |  |
| SDR-2-CON-SL-ZA-3120 | Install Footings |  | 2026-10-28 → 2026-11-04 (+7d) | 20d → 14d |
| 12 | **Backfilling** | 2026-10-29 → 2026-11-05 (+7d) | 2026-11-21 → 2026-11-28 (+7d) |  |
| SDR-2-CON-SL-ZA-3140 | Backfilling over LV Cables of Street lighting | 2026-10-29 → 2026-11-05 (+7d) | 2026-11-21 → 2026-11-28 (+7d) | 20d → 14d |
| 13 | **Install pole** | 2026-12-09 → 2026-12-16 (+7d) | 2027-01-02 → 2027-01-09 (+7d) |  |
| SDR-2-CON-SL-ZA-3130 | Install Pole | 2026-12-09 → 2026-12-16 (+7d) | 2027-01-02 → 2027-01-09 (+7d) | 20d → 14d |
| 24 | **Street Lighting Network IN ( PH2-A-MCG0 )** |  | 2026-12-21 → 2026-12-28 (+7d) |  |
| 10 | **Excavation** |  | 2026-10-28 → 2026-11-04 (+7d) |  |
| SDR-2-CON-SL-ZA-3670 | Excavation for LV Cable Drawpits |  | 2026-10-28 → 2026-11-04 (+7d) | 31d → 25d |
| SDR-2-CON-SL-ZA-3150 | Excavation for LV Cable Trenches |  | 2026-10-28 → 2026-11-04 (+7d) | 96d → 90d |
| 11 | **Install Footings** |  | 2026-10-28 → 2026-11-04 (+7d) |  |
| SDR-2-CON-SL-ZA-3160 | Install Footings |  | 2026-10-28 → 2026-11-04 (+7d) | 96d → 90d |
| 12 | **Backfilling** | 2026-10-29 → 2026-11-05 (+7d) | 2026-11-19 → 2026-11-26 (+7d) |  |
| SDR-2-CON-SL-ZA-3180 | Backfilling over LV Cables of Street lighting | 2026-10-29 → 2026-11-05 (+7d) | 2026-11-19 → 2026-11-26 (+7d) | 96d → 90d |
| 13 | **Install pole** | 2026-12-08 → 2026-12-15 (+7d) | 2026-12-21 → 2026-12-28 (+7d) |  |
| SDR-2-CON-SL-ZA-3170 | Install Pole | 2026-12-08 → 2026-12-15 (+7d) | 2026-12-21 → 2026-12-28 (+7d) | 96d → 90d |
| 25 | **Street Lighting Network IN ( PH2-A-MCH0 )** |  | 2026-12-27 → 2027-01-03 (+7d) |  |
| 10 | **Excavation** |  | 2026-10-28 → 2026-11-04 (+7d) |  |
| SDR-2-CON-SL-ZA-3680 | Excavation for LV Cable Drawpits |  | 2026-10-28 → 2026-11-04 (+7d) | 31d → 25d |
| SDR-2-CON-SL-ZA-3190 | Excavation for LV Cable Trenches |  | 2026-10-28 → 2026-11-04 (+7d) | 31d → 25d |
| 11 | **Install Footings** |  | 2026-10-28 → 2026-11-04 (+7d) |  |
| SDR-2-CON-SL-ZA-3200 | Install Footings |  | 2026-10-28 → 2026-11-04 (+7d) | 31d → 25d |
| 12 | **Backfilling** | 2026-10-29 → 2026-11-05 (+7d) | 2026-11-19 → 2026-11-26 (+7d) |  |
| SDR-2-CON-SL-ZA-3220 | Backfilling over LV Cables of Street lighting | 2026-10-29 → 2026-11-05 (+7d) | 2026-11-19 → 2026-11-26 (+7d) | 31d → 25d |
| 13 | **Install pole** | 2026-12-08 → 2026-12-15 (+7d) | 2026-12-27 → 2027-01-03 (+7d) |  |
| SDR-2-CON-SL-ZA-3210 | Install Pole | 2026-12-08 → 2026-12-15 (+7d) | 2026-12-27 → 2027-01-03 (+7d) | 31d → 25d |
| 27 | **Street Lighting Network IN ( PH2-ART-MC10 )** |  | 2026-12-31 → 2027-01-07 (+7d) |  |
| 10 | **Excavation** |  | 2026-10-28 → 2026-11-04 (+7d) |  |
| SDR-2-CON-SL-ZA-3690 | Excavation for LV Cable Drawpits |  | 2026-10-28 → 2026-11-04 (+7d) | 41d → 35d |
| SDR-2-CON-SL-ZA-2910 | Excavation for LV Cable Trenches |  | 2026-10-28 → 2026-11-04 (+7d) | 41d → 35d |
| 11 | **Install Footings** |  | 2026-10-28 → 2026-11-04 (+7d) |  |
| SDR-2-CON-SL-ZA-2920 | Install Footings |  | 2026-10-28 → 2026-11-04 (+7d) | 41d → 35d |
| 12 | **Backfilling** | 2026-10-29 → 2026-11-05 (+7d) | 2026-11-22 → 2026-11-29 (+7d) |  |
| SDR-2-CON-SL-ZA-2940 | Backfilling over LV Cables of Street lighting | 2026-10-29 → 2026-11-05 (+7d) | 2026-11-22 → 2026-11-29 (+7d) | 41d → 35d |
| 13 | **Install pole** | 2026-12-08 → 2026-12-15 (+7d) | 2026-12-31 → 2027-01-07 (+7d) |  |
| SDR-2-CON-SL-ZA-2930 | Install Pole | 2026-12-08 → 2026-12-15 (+7d) | 2026-12-31 → 2027-01-07 (+7d) | 91d → 85d |
| 10 | **Lighting Pole Panels** | 2026-10-29 → 2026-11-05 (+7d) | 2027-02-16 → 2027-02-24 (+8d) |  |
| 1 | **Excavation** | 2026-10-29 → 2026-11-05 (+7d) | 2026-11-22 → 2026-11-29 (+7d) |  |
| SDR-2-CON-SL-ZA-2650 | Street Lighting Panels Excavation | 2026-10-29 → 2026-11-05 (+7d) | 2026-11-22 → 2026-11-29 (+7d) | 43d → 37d |
| 2 | **Install Footings** | 2026-11-23 → 2026-11-30 (+7d) | 2026-12-15 → 2026-12-22 (+7d) |  |
| SDR-2-CON-SL-ZA-2760 | Installation Footings Street Lighting Panels | 2026-11-23 → 2026-11-30 (+7d) | 2026-12-15 → 2026-12-22 (+7d) | 51d → 45d |
| 3 | **Backfilling** | 2026-12-16 → 2026-12-23 (+7d) | 2027-01-05 → 2027-01-12 (+7d) |  |
| SDR-2-CON-SL-ZA-2770 | Street Lighting Panels Backfilling | 2026-12-16 → 2026-12-23 (+7d) | 2027-01-05 → 2027-01-12 (+7d) | 51d → 45d |
| 4 | **Install pole** | 2027-01-24 → 2027-01-31 (+7d) | 2027-02-16 → 2027-02-24 (+8d) |  |
| SDR-2-CON-SL-ZA-2780 | Street Lighting Panels Installation | 2027-01-24 → 2027-01-31 (+7d) | 2027-02-16 → 2027-02-24 (+8d) | 51d → 45d |
| 11 | **Ring Main Unit** | 2026-10-29 → 2026-11-05 (+7d) | 2027-01-18 → 2027-01-25 (+7d) |  |
| 1 | **Leveling** | 2026-10-29 → 2026-11-05 (+7d) | 2026-11-21 → 2026-11-28 (+7d) |  |
| SDR-2-CON-SL-ZA-2660 | Ring Main Unit leveling | 2026-10-29 → 2026-11-05 (+7d) | 2026-11-21 → 2026-11-28 (+7d) | 43d → 37d |
| 2 | **Lean Concrete** | 2026-11-22 → 2026-11-29 (+7d) | 2026-12-14 → 2026-12-21 (+7d) |  |
| SDR-2-CON-SL-ZA-2790 | Ring Main Unit Lean Concrete | 2026-11-22 → 2026-11-29 (+7d) | 2026-12-14 → 2026-12-21 (+7d) | 76d → 70d |
| 3 | **Installation** | 2026-12-27 → 2027-01-03 (+7d) | 2027-01-18 → 2027-01-25 (+7d) |  |
| SDR-2-CON-SL-ZA-2800 | Ring Main Unit installation for Street Lighting | 2026-12-27 → 2027-01-03 (+7d) | 2027-01-18 → 2027-01-25 (+7d) | 76d → 70d |
| 12 | **Feeder Pillars** | 2026-10-31 → 2026-11-07 (+7d) | 2027-01-25 → 2027-02-01 (+7d) |  |
| 1 | **Leveling** | 2026-10-31 → 2026-11-07 (+7d) | 2026-11-22 → 2026-11-29 (+7d) |  |

| ID | Task | Start | Finish | Total float |
| --- | --- | --- | --- | --- |
| SDR-2-CON-SL-ZA-2670 | Feeder Pillars Leveling | 2026-10-31 → 2026-11-07 (+7d) | 2026-11-22 → 2026-11-29 (+7d) | 42d → 36d |
| 2 | **Lean Concrete** | 2026-11-23 → 2026-11-30 (+7d) | 2026-12-15 → 2026-12-22 (+7d) |  |
| SDR-2-CON-SL-ZA-2810 | Feeder Pillars Lean Concrete | 2026-11-23 → 2026-11-30 (+7d) | 2026-12-15 → 2026-12-22 (+7d) | 70d → 64d |
| 3 | **Installation** | 2027-01-03 → 2027-01-10 (+7d) | 2027-01-25 → 2027-02-01 (+7d) |  |
| SDR-2-CON-SL-ZA-2820 | Feeder Pillars Installation | 2027-01-03 → 2027-01-10 (+7d) | 2027-01-25 → 2027-02-01 (+7d) | 70d → 64d |
| 13 | **KWH Frame** | 2026-12-19 → 2026-12-26 (+7d) | 2027-02-27 → 2027-03-06 (+7d) |  |
| 1 | **Leveling** | 2026-12-19 → 2026-12-26 (+7d) | 2027-01-10 → 2027-01-17 (+7d) |  |
| SDR-2-CON-SL-ZA-2680 | KWH meter mounting frame Leveling | 2026-12-19 → 2026-12-26 (+7d) | 2027-01-10 → 2027-01-17 (+7d) | 10d → 4d |
| 2 | **Lean Concrete** | 2027-01-11 → 2027-01-18 (+7d) | 2027-02-02 → 2027-02-09 (+7d) |  |
| SDR-2-CON-SL-ZA-2830 | KWH meter mounting frame Lean Concrete | 2027-01-11 → 2027-01-18 (+7d) | 2027-02-02 → 2027-02-09 (+7d) | 43d → 37d |
| 3 | **Installation** | 2027-02-03 → 2027-02-10 (+7d) | 2027-02-27 → 2027-03-06 (+7d) |  |
| SDR-2-CON-SL-ZA-2840 | KWH meter mounting frame installation | 2027-02-03 → 2027-02-10 (+7d) | 2027-02-27 → 2027-03-06 (+7d) | 43d → 37d |
| 14 | **Street Lighting Sub-station** | 2026-12-20 → 2026-12-27 (+7d) | 2027-03-01 → 2027-03-08 (+7d) |  |
| 1 | **Leveling** | 2026-12-20 → 2026-12-27 (+7d) | 2027-01-11 → 2027-01-18 (+7d) |  |
| SDR-2-CON-SL-ZA-2690 | Unit Substation Leveling | 2026-12-20 → 2026-12-27 (+7d) | 2027-01-11 → 2027-01-18 (+7d) | 33d → 27d |
| 2 | **Lean Concrete** | 2027-01-12 → 2027-01-19 (+7d) | 2027-02-03 → 2027-02-10 (+7d) |  |
| SDR-2-CON-SL-ZA-2850 | Unit Substation Lean Concrete | 2027-01-12 → 2027-01-19 (+7d) | 2027-02-03 → 2027-02-10 (+7d) | 41d → 35d |
| 3 | **Installation** | 2027-02-04 → 2027-02-11 (+7d) | 2027-03-01 → 2027-03-08 (+7d) |  |
| SDR-2-CON-SL-ZA-2860 | Unit Substation Install for Street Lighting | 2027-02-04 → 2027-02-11 (+7d) | 2027-03-01 → 2027-03-08 (+7d) | 41d → 35d |
| 2 | **MV Network** |  | 2026-12-23 → 2026-12-30 (+7d) |  |
| 1 | **LOOP 3** |  | 2026-11-12 → 2026-11-19 (+7d) |  |
| 6 | **Excavation** |  | 2026-10-19 → 2026-10-26 (+7d) |  |
| SDR-2-CON-MV-ZA-1000 | Excavation Works |  | 2026-10-19 → 2026-10-26 (+7d) | 14d → 8d |
| 7 | **Pipe laying** |  | 2026-10-19 → 2026-10-26 (+7d) |  |
| SDR-2-CON-MV-ZA-1070 | Pipe Laying |  | 2026-10-19 → 2026-10-26 (+7d) | 28d → 22d |
| 8 | **Backfilling** |  | 2026-10-19 → 2026-10-26 (+7d) |  |
| SDR-2-CON-MV-ZA-1150 | Backfilling Works |  | 2026-10-19 → 2026-10-26 (+7d) | 28d → 22d |
| 9 | **Pulling Cable** | 2026-10-20 → 2026-10-27 (+7d) | 2026-11-12 → 2026-11-19 (+7d) |  |
| SDR-2-CON-MV-ZA-1100 | Pulling Cable | 2026-10-20 → 2026-10-27 (+7d) | 2026-11-12 → 2026-11-19 (+7d) | 28d → 22d |
| 2 | **LOOP 4** |  | 2026-12-23 → 2026-12-30 (+7d) |  |
| 6 | **Excavation** |  | 2026-10-19 → 2026-10-26 (+7d) |  |
| SDR-2-CON-MV-ZA-1160 | Excavation Works |  | 2026-10-19 → 2026-10-26 (+7d) | 14d → 8d |
| 7 | **Pipe laying** |  | 2026-10-19 → 2026-10-26 (+7d) |  |
| SDR-2-CON-MV-ZA-1170 | Pipe Laying |  | 2026-10-19 → 2026-10-26 (+7d) | 14d → 8d |
| 8 | **Backfilling** | 2026-10-20 → 2026-10-27 (+7d) | 2026-11-12 → 2026-11-19 (+7d) |  |
| SDR-2-CON-MV-ZA-1190 | Backfilling Works | 2026-10-20 → 2026-10-27 (+7d) | 2026-11-12 → 2026-11-19 (+7d) | 14d → 8d |
| 9 | **Pulling Cable** | 2026-11-30 → 2026-12-07 (+7d) | 2026-12-23 → 2026-12-30 (+7d) |  |
| SDR-2-CON-MV-ZA-1180 | Pulling Cable | 2026-11-30 → 2026-12-07 (+7d) | 2026-12-23 → 2026-12-30 (+7d) | 14d → 8d |
| 3 | **LOOP 5** |  | 2026-12-16 → 2026-12-23 (+7d) |  |
| 6 | **Excavation** |  | 2026-10-19 → 2026-10-26 (+7d) |  |
| SDR-2-CON-MV-ZA-1200 | Excavation Works |  | 2026-10-19 → 2026-10-26 (+7d) | 20d → 14d |
| 7 | **Pipe laying** |  | 2026-10-19 → 2026-10-26 (+7d) |  |
| SDR-2-CON-MV-ZA-1210 | Pipe Laying |  | 2026-10-19 → 2026-10-26 (+7d) | 20d → 14d |
| 8 | **Backfilling** | 2026-10-20 → 2026-10-27 (+7d) | 2026-11-12 → 2026-11-19 (+7d) |  |
| SDR-2-CON-MV-ZA-1230 | Backfilling Works | 2026-10-20 → 2026-10-27 (+7d) | 2026-11-12 → 2026-11-19 (+7d) | 20d → 14d |
| 9 | **Pulling Cable** | 2026-11-23 → 2026-11-30 (+7d) | 2026-12-16 → 2026-12-23 (+7d) |  |
| SDR-2-CON-MV-ZA-1220 | Pulling Cable | 2026-11-23 → 2026-11-30 (+7d) | 2026-12-16 → 2026-12-23 (+7d) | 20d → 14d |
| 4 | **LOOP 6** |  | 2026-12-14 → 2026-12-21 (+7d) |  |
| 6 | **Excavation** |  | 2026-10-19 → 2026-10-26 (+7d) |  |
| SDR-2-CON-MV-ZA-1240 | Excavation Works |  | 2026-10-19 → 2026-10-26 (+7d) | 35d → 43d |
| 7 | **Pipe laying** |  | 2026-10-19 → 2026-10-26 (+7d) |  |
| SDR-2-CON-MV-ZA-1250 | Pipe Laying |  | 2026-10-19 → 2026-10-26 (+7d) | 35d → 43d |
| 8 | **Backfilling** | 2026-10-20 → 2026-10-27 (+7d) | 2026-11-12 → 2026-11-19 (+7d) |  |
| SDR-2-CON-MV-ZA-1270 | Backfilling Works | 2026-10-20 → 2026-10-27 (+7d) | 2026-11-12 → 2026-11-19 (+7d) | 35d → 43d |
| 9 | **Pulling Cable** | 2026-11-21 → 2026-11-28 (+7d) | 2026-12-14 → 2026-12-21 (+7d) |  |
| SDR-2-CON-MV-ZA-1260 | Pulling Cable | 2026-11-21 → 2026-11-28 (+7d) | 2026-12-14 → 2026-12-21 (+7d) | 35d → 43d |
| 3 | **TELECOMMUNICATIONS Works** |  | 2027-02-20 → 2027-02-28 (+8d) |  |
| 1 | **TELECOMMUNICATION IN ( PH2-COL-MC10 )** |  | 2027-02-15 → 2027-02-23 (+8d) |  |
| 3 | **Ducts** |  | 2027-02-15 → 2027-02-23 (+8d) |  |
| 2 | **Excavation** |  | 2026-11-28 → 2026-12-05 (+7d) |  |
| SDR-2-CON-TE-ZA-4560 | Excavation for telecom crossing ducts |  | 2026-11-03 → 2026-11-10 (+7d) | 5d → 21d |
| SDR-2-CON-TE-ZA-1000 | Excavation for telecom trenches | 2026-11-04 → 2026-11-11 (+7d) | 2026-11-28 → 2026-12-05 (+7d) | 36d → 30d |
| 5 | **Pipe laying** | 2026-11-29 → 2026-12-06 (+7d) | 2026-12-20 → 2026-12-27 (+7d) |  |
| SDR-2-CON-TE-ZA-1010 | HDPE Pipes for Telecom Installation | 2026-11-29 → 2026-12-06 (+7d) | 2026-12-20 → 2026-12-27 (+7d) | 36d → 30d |
| 6 | **Backfilling** | 2026-12-21 → 2026-12-28 (+7d) | 2027-01-10 → 2027-01-17 (+7d) |  |
| SDR-2-CON-TE-ZA-1020 | Backfilling over HDPE Telecom Pipes | 2026-12-21 → 2026-12-28 (+7d) | 2027-01-10 → 2027-01-17 (+7d) | 36d → 30d |
| 7 | **Pulling Cable** | 2027-01-23 → 2027-01-30 (+7d) | 2027-02-15 → 2027-02-23 (+8d) |  |
| SDR-2-CON-TE-ZA-1840 | Pulling Cable | 2027-01-23 → 2027-01-30 (+7d) | 2027-02-15 → 2027-02-23 (+8d) | 36d → 30d |
| 4 | **Manholes** |  | 2027-01-19 → 2027-01-26 (+7d) |  |
| 2 | **Bedding Work** |  | 2026-11-04 → 2026-11-11 (+7d) |  |

| ID | Task | Start | Finish | Complete | Total float |
| --- | --- | --- | --- | --- | --- |
| SDR-2-CON-TE-ZA-1850 | Sand bedding for Telecom Manhole |  | 2026-11-04 → 2026-11-11 (+7d) | 30% → 50% | 4.74d → 20.74d |
| 3 | **Install Manholes** |  | 2026-11-28 → 2026-12-05 (+7d) |  |  |
| SDR-2-CON-TE-ZA-1040 | Installation of Telecom Manhole |  | 2026-11-28 → 2026-12-05 (+7d) | 30% → 50% | 4.74d → 20.74d |
| 4 | **Testting** | 2026-11-28 → 2026-12-05 (+7d) | 2026-12-14 → 2026-12-21 (+7d) |  |  |
| SDR-2-CON-TE-ZA-1050 | Telecom Manhole finishing works | 2026-11-28 → 2026-12-05 (+7d) | 2026-12-14 → 2026-12-21 (+7d) |  | 4.74d → 20.74d |
| 5 | **Backfilling** | 2026-12-26 → 2027-01-02 (+7d) | 2027-01-19 → 2027-01-26 (+7d) |  |  |
| SDR-2-CON-TE-ZA-1060 | Backfilling over Telecom Manhole | 2026-12-26 → 2027-01-02 (+7d) | 2027-01-19 → 2027-01-26 (+7d) |  | 4.74d → 20.74d |
| 2 | **TELECOMMUNICATION IN ( PH2-COL-MC20 )** |  | 2026-12-16 → 2026-12-23 (+7d) |  |  |
| 3 | **Ducts** |  | 2026-11-12 → 2026-11-19 (+7d) |  |  |
| 2 | **Excavation** |  | 2026-10-19 → 2026-10-26 (+7d) |  |  |
| SDR-2-CON-TE-ZA-3210 | Excavation for telecom crossing ducts & trenches |  | 2026-10-19 → 2026-10-26 (+7d) | 75% → 80% | 3d → 5d |
| 5 | **Pipe laying** |  | 2026-10-19 → 2026-10-26 (+7d) |  |  |
| SDR-2-CON-TE-ZA-3220 | HDPE Pipes for Telecom Installation |  | 2026-10-19 → 2026-10-26 (+7d) |  | 133d → 127d |
| 6 | **Backfilling** |  | 2026-10-19 → 2026-10-26 (+7d) |  |  |
| SDR-2-CON-TE-ZA-3230 | Backfilling over HDPE Telecom Pipes |  | 2026-10-19 → 2026-10-26 (+7d) |  | 133d → 127d |
| 7 | **Pulling Cable** | 2026-10-20 → 2026-10-27 (+7d) | 2026-11-12 → 2026-11-19 (+7d) |  |  |
| SDR-2-CON-TE-ZA-3280 | Pulling Cable | 2026-10-20 → 2026-10-27 (+7d) | 2026-11-12 → 2026-11-19 (+7d) |  | 133d → 127d |
| 4 | **Manholes** |  | 2026-12-16 → 2026-12-23 (+7d) |  |  |
| 2 | **Bedding Work** |  | 2026-10-25 → 2026-11-01 (+7d) |  |  |
| SDR-2-CON-TE-ZA-3290 | Sand bedding for Telecom Manhole |  | 2026-10-25 → 2026-11-01 (+7d) | 30% → 60% | 25d → 27d |
| 3 | **Install Manholes** |  | 2026-10-25 → 2026-11-01 (+7d) |  |  |
| SDR-2-CON-TE-ZA-3250 | Installation of Telecom Manhole |  | 2026-10-25 → 2026-11-01 (+7d) | 58% → 60% | 25d → 27d |
| 4 | **Testting** | 2026-10-26 → 2026-11-02 (+7d) | 2026-11-10 → 2026-11-17 (+7d) |  |  |
| SDR-2-CON-TE-ZA-3260 | Telecom Manhole finishing works | 2026-10-26 → 2026-11-02 (+7d) | 2026-11-10 → 2026-11-17 (+7d) |  | 25d → 27d |
| 5 | **Backfilling** | 2026-11-23 → 2026-11-30 (+7d) | 2026-12-16 → 2026-12-23 (+7d) |  |  |
| SDR-2-CON-TE-ZA-3270 | Backfilling over Telecom Manhole | 2026-11-23 → 2026-11-30 (+7d) | 2026-12-16 → 2026-12-23 (+7d) |  | 25d → 27d |
| 11 | **TELECOMMUNICATION IN ( PH2-A-MCA0 )** |  | 2027-02-11 → 2027-02-18 (+7d) |  |  |
| 3 | **Ducts** |  | 2027-01-07 → 2027-01-14 (+7d) |  |  |
| 2 | **Excavation** |  | 2026-10-19 → 2026-10-26 (+7d) |  |  |
| SDR-2-CON-TE-ZA-3300 | Excavation for telecom crossing ducts & trenches |  | 2026-10-19 → 2026-10-26 (+7d) |  | 3d → 5d |
| 5 | **Pipe laying** | 2026-10-20 → 2026-10-27 (+7d) | 2026-11-10 → 2026-11-17 (+7d) |  |  |
| SDR-2-CON-TE-ZA-3310 | HDPE Pipes for Telecom Installation | 2026-10-20 → 2026-10-27 (+7d) | 2026-11-10 → 2026-11-17 (+7d) |  | 6d → 5d |
| 6 | **Backfilling** | 2026-11-11 → 2026-11-18 (+7d) | 2026-12-03 → 2026-12-10 (+7d) |  |  |
| SDR-2-CON-TE-ZA-3320 | Backfilling over HDPE Telecom Pipes | 2026-11-11 → 2026-11-18 (+7d) | 2026-12-03 → 2026-12-10 (+7d) |  | 6d → 5d |
| 7 | **Pulling Cable** | 2026-12-16 → 2026-12-23 (+7d) | 2027-01-07 → 2027-01-14 (+7d) |  |  |
| SDR-2-CON-TE-ZA-3370 | Pulling Cable | 2026-12-16 → 2026-12-23 (+7d) | 2027-01-07 → 2027-01-14 (+7d) |  | 6d → 5d |
| 4 | **Manholes** |  | 2027-02-11 → 2027-02-18 (+7d) |  |  |
| 1 | **Excavation** |  | 2026-10-29 → 2026-11-05 (+7d) |  |  |
| SDR-2-CON-TE-ZA-3330 | Excavation for Telecom Manholes |  | 2026-10-29 → 2026-11-05 (+7d) | 35% → 70% | 8.81d → 16.81d |
| 2 | **Bedding Work** | 2026-10-29 → 2026-10-14 (-15d) | 2026-11-22 → 2026-11-29 (+7d) |  |  |
| SDR-2-CON-TE-ZA-3380 | Sand bedding for Telecom Manhole | 2026-10-29 → 2026-10-14 A (-15d) | 2026-11-22 → 2026-11-29 (+7d) | 0% → 25% | 8.81d → 16.81d |
| 3 | **Install Manholes** | 2026-11-22 → 2026-10-22 (-31d) | 2026-12-15 → 2026-12-22 (+7d) |  |  |
| SDR-2-CON-TE-ZA-3340 | Installation of Telecom Manhole | 2026-11-22 → 2026-10-22 A (-31d) | 2026-12-15 → 2026-12-22 (+7d) | 0% → 25% | 8.81d → 16.81d |
| 4 | **Testting** | 2026-12-15 → 2026-12-22 (+7d) | 2027-01-07 → 2027-01-14 (+7d) |  |  |
| SDR-2-CON-TE-ZA-3350 | Telecom Manhole finishing works | 2026-12-15 → 2026-12-22 (+7d) | 2027-01-07 → 2027-01-14 (+7d) |  | 8.81d → 16.81d |
| 5 | **Backfilling** | 2027-01-19 → 2027-01-26 (+7d) | 2027-02-11 → 2027-02-18 (+7d) |  |  |
| SDR-2-CON-TE-ZA-3360 | Backfilling over Telecom Manhole | 2027-01-19 → 2027-01-26 (+7d) | 2027-02-11 → 2027-02-18 (+7d) |  | 8.81d → 16.81d |
| 12 | **TELECOMMUNICATION IN ( PH2-A-MCB0 )** |  | 2027-02-20 → 2027-02-28 (+8d) |  |  |
| 3 | **Ducts** |  | 2027-01-11 → 2027-01-18 (+7d) |  |  |
| 2 | **Excavation** |  | 2026-10-19 → 2026-10-26 (+7d) |  |  |
| SDR-2-CON-TE-ZA-3390 | Excavation for telecom crossing ducts & trenches |  | 2026-10-19 → 2026-10-26 (+7d) |  | 3d → 5d |
| 5 | **Pipe laying** | 2026-10-20 → 2026-10-27 (+7d) | 2026-11-12 → 2026-11-19 (+7d) |  |  |
| SDR-2-CON-TE-ZA-3400 | HDPE Pipes for Telecom Installation | 2026-10-20 → 2026-10-27 (+7d) | 2026-11-12 → 2026-11-19 (+7d) |  | 3d → 5d |
| 6 | **Backfilling** | 2026-11-14 → 2026-11-21 (+7d) | 2026-12-06 → 2026-12-13 (+7d) |  |  |
| SDR-2-CON-TE-ZA-3410 | Backfilling over HDPE Telecom Pipes | 2026-11-14 → 2026-11-21 (+7d) | 2026-12-06 → 2026-12-13 (+7d) |  | 3d → 5d |
| 7 | **Pulling Cable** | 2026-12-19 → 2026-12-26 (+7d) | 2027-01-11 → 2027-01-18 (+7d) |  |  |
| SDR-2-CON-TE-ZA-3460 | Pulling Cable | 2026-12-19 → 2026-12-26 (+7d) | 2027-01-11 → 2027-01-18 (+7d) |  | 3d → 5d |
| 4 | **Manholes** |  | 2027-02-20 → 2027-02-28 (+8d) |  |  |
| 1 | **Excavation** |  | 2026-11-04 → 2026-11-11 (+7d) |  |  |
| SDR-2-CON-TE-ZA-3420 | Excavation for Telecom Manholes |  | 2026-11-04 → 2026-11-11 (+7d) | 50% → 75% | 1.81d → 9.81d |
| 2 | **Bedding Work** | 2026-11-04 → 2026-10-21 (-14d) | 2026-11-28 → 2026-12-05 (+7d) |  |  |
| SDR-2-CON-TE-ZA-3470 | Sand bedding for Telecom Manhole | 2026-11-04 → 2026-10-21 A (-14d) | 2026-11-28 → 2026-12-05 (+7d) | 0% → 50% | 1.81d → 9.81d |
| 3 | **Install Manholes** | 2026-11-28 → 2026-10-22 (-37d) | 2026-12-21 → 2026-12-28 (+7d) |  |  |
| SDR-2-CON-TE-ZA-3430 | Installation of Telecom Manhole | 2026-11-28 → 2026-10-22 A (-37d) | 2026-12-21 → 2026-12-28 (+7d) | 0% → 50% | 1.81d → 9.81d |
| 4 | **Testting** | 2026-12-21 → 2026-12-28 (+7d) | 2027-01-14 → 2027-01-21 (+7d) |  |  |
| SDR-2-CON-TE-ZA-3440 | Telecom Manhole finishing works | 2026-12-21 → 2026-12-28 (+7d) | 2027-01-14 → 2027-01-21 (+7d) |  | 1.81d → 9.81d |
| 5 | **Backfilling** | 2027-01-26 → 2027-02-02 (+7d) | 2027-02-20 → 2027-02-28 (+8d) |  |  |
| SDR-2-CON-TE-ZA-3450 | Backfilling over Telecom Manhole | 2027-01-26 → 2027-02-02 (+7d) | 2027-02-20 → 2027-02-28 (+8d) |  | 1.81d → 9.81d |
| 13 | **TELECOMMUNICATION IN ( PH2-A-MCC0 )** |  | 2027-01-02 → 2027-01-09 (+7d) |  |  |
| 3 | **Ducts** |  | 2026-12-22 → 2026-12-29 (+7d) |  |  |

| ID | Task | Start | Finish | Complete | Total float |
| --- | --- | --- | --- | --- | --- |
| 2 | **Excavation** |  | 2026-10-19 → 2026-10-26 (+7d) |  |  |
| SDR-2-CON-TE-ZA-3480 | Excavation for telecom crossing ducts & trenches |  | 2026-10-19 → 2026-10-26 (+7d) |  | 7d → 22d |
| 5 | **Pipe laying** |  | 2026-10-24 → 2026-10-31 (+7d) |  |  |
| SDR-2-CON-TE-ZA-3490 | HDPE Pipes for Telecom Installation |  | 2026-10-24 → 2026-10-31 (+7d) |  | 20d → 22d |
| 6 | **Backfilling** | 2026-10-25 → 2026-11-01 (+7d) | 2026-11-16 → 2026-11-23 (+7d) |  |  |
| SDR-2-CON-TE-ZA-3500 | Backfilling over HDPE Telecom Pipes | 2026-10-25 → 2026-11-01 (+7d) | 2026-11-16 → 2026-11-23 (+7d) |  | 20d → 22d |
| 7 | **Pulling Cable** | 2026-11-29 → 2026-12-06 (+7d) | 2026-12-22 → 2026-12-29 (+7d) |  |  |
| SDR-2-CON-TE-ZA-3550 | Pulling Cable | 2026-11-29 → 2026-12-06 (+7d) | 2026-12-22 → 2026-12-29 (+7d) |  | 20d → 22d |
| 4 | **Manholes** |  | 2027-01-02 → 2027-01-09 (+7d) |  |  |
| 2 | **Bedding Work** |  | 2026-11-01 → 2026-11-08 (+7d) |  |  |
| SDR-2-CON-TE-ZA-3560 | Sand bedding for Telecom Manhole |  | 2026-11-01 → 2026-11-08 (+7d) | 35% → 50% | 11.81d → 13.81d |
| 3 | **Install Manholes** |  | 2026-11-23 → 2026-11-30 (+7d) |  |  |
| SDR-2-CON-TE-ZA-3520 | Installation of Telecom Manhole |  | 2026-11-23 → 2026-11-30 (+7d) | 35% → 50% | 11.81d → 13.81d |
| 4 | **Testting** | 2026-11-23 → 2026-11-30 (+7d) | 2026-12-09 → 2026-12-16 (+7d) |  |  |
| SDR-2-CON-TE-ZA-3530 | Telecom Manhole finishing works | 2026-11-23 → 2026-11-30 (+7d) | 2026-12-09 → 2026-12-16 (+7d) |  | 11.81d → 13.81d |
| 5 | **Backfilling** | 2026-12-09 → 2026-12-16 (+7d) | 2027-01-02 → 2027-01-09 (+7d) |  |  |
| SDR-2-CON-TE-ZA-3540 | Backfilling over Telecom Manhole | 2026-12-09 → 2026-12-16 (+7d) | 2027-01-02 → 2027-01-09 (+7d) |  | 11.81d → 13.81d |
| 14 | **TELECOMMUNICATION IN ( PH2-A-MCD0 )** |  | 2027-01-12 → 2027-01-19 (+7d) |  |  |
| 3 | **Ducts** |  | 2026-12-08 → 2026-12-15 (+7d) |  |  |
| 2 | **Excavation** |  | 2026-10-19 → 2026-10-26 (+7d) |  |  |
| SDR-2-CON-TE-ZA-3570 | Excavation for telecom crossing ducts & trenches |  | 2026-10-19 → 2026-10-26 (+7d) |  | 7d → 22d |
| 5 | **Pipe laying** |  | 2026-10-24 → 2026-10-31 (+7d) |  |  |
| SDR-2-CON-TE-ZA-3580 | HDPE Pipes for Telecom Installation |  | 2026-10-24 → 2026-10-31 (+7d) |  | 111d → 105d |
| 6 | **Backfilling** | 2026-10-25 → 2026-11-01 (+7d) | 2026-11-14 → 2026-11-21 (+7d) |  |  |
| SDR-2-CON-TE-ZA-3590 | Backfilling over HDPE Telecom Pipes | 2026-10-25 → 2026-11-01 (+7d) | 2026-11-14 → 2026-11-21 (+7d) |  | 111d → 105d |
| 7 | **Pulling Cable** | 2026-11-15 → 2026-11-22 (+7d) | 2026-12-08 → 2026-12-15 (+7d) |  |  |
| SDR-2-CON-TE-ZA-3640 | Pulling Cable | 2026-11-15 → 2026-11-22 (+7d) | 2026-12-08 → 2026-12-15 (+7d) |  | 111d → 105d |
| 4 | **Manholes** |  | 2027-01-12 → 2027-01-19 (+7d) |  |  |
| 2 | **Bedding Work** |  | 2026-11-05 → 2026-11-12 (+7d) |  |  |
| SDR-2-CON-TE-ZA-3650 | Sand bedding for Telecom Manhole |  | 2026-11-05 → 2026-11-12 (+7d) | 35% → 50% | 36.81d → 30.81d |
| 3 | **Install Manholes** |  | 2026-11-30 → 2026-12-07 (+7d) |  |  |
| SDR-2-CON-TE-ZA-3610 | Installation of Telecom Manhole |  | 2026-11-30 → 2026-12-07 (+7d) | 35% → 50% | 36.81d → 30.81d |
| 4 | **Testting** | 2026-12-06 → 2026-12-13 (+7d) | 2026-12-19 → 2026-12-26 (+7d) |  |  |
| SDR-2-CON-TE-ZA-3620 | Telecom Manhole finishing works | 2026-12-06 → 2026-12-13 (+7d) | 2026-12-19 → 2026-12-26 (+7d) |  | 32d → 26d |
| 5 | **Backfilling** | 2026-12-20 → 2026-12-27 (+7d) | 2027-01-12 → 2027-01-19 (+7d) |  |  |
| SDR-2-CON-TE-ZA-3630 | Backfilling over Telecom Manhole | 2026-12-20 → 2026-12-27 (+7d) | 2027-01-12 → 2027-01-19 (+7d) |  | 32d → 26d |
| 5 | **TELECOMMUNICATION IN ( PH2-A-MCE0 )** |  | 2027-02-03 → 2027-02-10 (+7d) |  |  |
| 3 | **Ducts** |  | 2026-12-07 → 2026-12-14 (+7d) |  |  |
| 2 | **Excavation** |  | 2026-10-19 → 2026-10-26 (+7d) |  |  |
| SDR-2-CON-TE-ZA-3660 | Excavation for telecom crossing ducts & trenches |  | 2026-10-19 → 2026-10-26 (+7d) |  | 7d → 22d |
| 5 | **Pipe laying** |  | 2026-10-19 → 2026-10-26 (+7d) |  |  |
| SDR-2-CON-TE-ZA-3670 | HDPE Pipes for Telecom Installation |  | 2026-10-19 → 2026-10-26 (+7d) |  | 112d → 106d |
| 6 | **Backfilling** | 2026-10-20 → 2026-10-27 (+7d) | 2026-11-12 → 2026-11-19 (+7d) |  |  |
| SDR-2-CON-TE-ZA-3680 | Backfilling over HDPE Telecom Pipes | 2026-10-20 → 2026-10-27 (+7d) | 2026-11-12 → 2026-11-19 (+7d) |  | 112d → 106d |
| 7 | **Pulling Cable** | 2026-11-14 → 2026-11-21 (+7d) | 2026-12-07 → 2026-12-14 (+7d) |  |  |
| SDR-2-CON-TE-ZA-3730 | Pulling Cable | 2026-11-14 → 2026-11-21 (+7d) | 2026-12-07 → 2026-12-14 (+7d) |  | 112d → 106d |
| 4 | **Manholes** |  | 2027-02-03 → 2027-02-10 (+7d) |  |  |
| 1 | **Excavation** |  | 2026-11-11 → 2026-11-18 (+7d) |  |  |
| SDR-2-CON-TE-ZA-3690 | Excavation for Telecom Manholes | 2026-10-19 A | 2026-11-11 → 2026-11-18 (+7d) | 0% → 25% | 8d → 23d |
| 2 | **Bedding Work** | 2026-11-12 → 2026-10-22 (-21d) | 2026-12-05 → 2026-12-12 (+7d) |  |  |
| SDR-2-CON-TE-ZA-3740 | Sand bedding for Telecom Manhole | 2026-11-12 → 2026-10-22 A (-21d) | 2026-12-05 → 2026-12-12 (+7d) | 0% → 20% | 8d → 23d |
| 3 | **Install Manholes** | 2026-12-06 → 2026-12-13 (+7d) | 2026-12-28 → 2027-01-04 (+7d) |  |  |
| SDR-2-CON-TE-ZA-3700 | Installation of Telecom Manhole | 2026-12-06 → 2026-12-13 (+7d) | 2026-12-28 → 2027-01-04 (+7d) |  | 8d → 23d |
| 4 | **Testting** | 2026-12-29 → 2027-01-05 (+7d) | 2027-01-11 → 2027-01-18 (+7d) |  |  |
| SDR-2-CON-TE-ZA-3710 | Telecom Manhole finishing works | 2026-12-29 → 2027-01-05 (+7d) | 2027-01-11 → 2027-01-18 (+7d) |  | 8d → 23d |
| 5 | **Backfilling** | 2027-01-12 → 2027-01-19 (+7d) | 2027-02-03 → 2027-02-10 (+7d) |  |  |
| SDR-2-CON-TE-ZA-3720 | Backfilling over Telecom Manhole | 2027-01-12 → 2027-01-19 (+7d) | 2027-02-03 → 2027-02-10 (+7d) |  | 8d → 23d |
| 6 | **TELECOMMUNICATION IN ( PH2-A-MCF0 )** |  | 2027-02-04 → 2027-02-11 (+7d) |  |  |
| 3 | **Ducts** |  | 2026-12-06 → 2026-12-13 (+7d) |  |  |
| 2 | **Excavation** |  | 2026-10-19 → 2026-10-26 (+7d) |  |  |
| SDR-2-CON-TE-ZA-3750 | Excavation for telecom crossing ducts & trenches |  | 2026-10-19 → 2026-10-26 (+7d) |  | 7d → 22d |
| 5 | **Pipe laying** |  | 2026-10-19 → 2026-10-26 (+7d) |  |  |
| SDR-2-CON-TE-ZA-3760 | HDPE Pipes for Telecom Installation |  | 2026-10-19 → 2026-10-26 (+7d) |  | 59d → 74d |
| 6 | **Backfilling** | 2026-10-20 → 2026-10-27 (+7d) | 2026-11-12 → 2026-11-19 (+7d) |  |  |
| SDR-2-CON-TE-ZA-3770 | Backfilling over HDPE Telecom Pipes | 2026-10-20 → 2026-10-27 (+7d) | 2026-11-12 → 2026-11-19 (+7d) |  | 59d → 74d |
| 7 | **Pulling Cable** | 2026-11-14 → 2026-11-21 (+7d) | 2026-12-06 → 2026-12-13 (+7d) |  |  |
| SDR-2-CON-TE-ZA-3820 | Pulling Cable | 2026-11-14 → 2026-11-21 (+7d) | 2026-12-06 → 2026-12-13 (+7d) |  | 59d → 74d |
| 4 | **Manholes** | 2026-10-19 → 2026-10-20 (+1d) | 2027-02-04 → 2027-02-11 (+7d) |  |  |
| 1 | **Excavation** | 2026-10-19 → 2026-10-20 (+1d) | 2026-11-11 → 2026-11-18 (+7d) |  |  |
| SDR-2-CON-TE-ZA-3780 | Excavation for Telecom Manholes | 2026-10-19 → 2026-10-20 A (+1d) | 2026-11-11 → 2026-11-18 (+7d) | 0% → 25% | 7d → 22d |

| ID | Task | Start | Finish | Complete | Total float |
| --- | --- | --- | --- | --- | --- |
| 2 | **Bedding Work** | 2026-11-12 → 2026-10-22 (-21d) | 2026-12-05 → 2026-12-12 (+7d) |  |  |
| SDR-2-CON-TE-ZA-3830 | Sand bedding for Telecom Manhole | 2026-11-12 → 2026-10-22 A (-21d) | 2026-12-05 → 2026-12-12 (+7d) | 0% → 20% | 7d → 22d |
| 3 | **Install Manholes** | 2026-12-06 → 2026-10-24 (-43d) | 2026-12-28 → 2027-01-04 (+7d) |  |  |
| SDR-2-CON-TE-ZA-3790 | Installation of Telecom Manhole | 2026-12-06 → 2026-10-24 A (-43d) | 2026-12-28 → 2027-01-04 (+7d) | 0% → 20% | 7d → 22d |
| 4 | **Testting** | 2026-12-29 → 2027-01-05 (+7d) | 2027-01-11 → 2027-01-18 (+7d) |  |  |
| SDR-2-CON-TE-ZA-3800 | Telecom Manhole finishing works | 2026-12-29 → 2027-01-05 (+7d) | 2027-01-11 → 2027-01-18 (+7d) |  | 7d → 22d |
| 5 | **Backfilling** | 2027-01-12 → 2027-01-19 (+7d) | 2027-02-04 → 2027-02-11 (+7d) |  |  |
| SDR-2-CON-TE-ZA-3810 | Backfilling over Telecom Manhole | 2027-01-12 → 2027-01-19 (+7d) | 2027-02-04 → 2027-02-11 (+7d) |  | 7d → 22d |
| 7 | **TELECOMMUNICATION IN ( PH2-A-MCG0 )** |  | 2027-02-03 → 2027-02-10 (+7d) |  |  |
| 3 | **Ducts** |  | 2026-12-16 → 2026-12-23 (+7d) |  |  |
| 2 | **Excavation** |  | 2026-10-19 → 2026-10-26 (+7d) |  |  |
| SDR-2-CON-TE-ZA-3840 | Excavation for telecom crossing ducts & trenches |  | 2026-10-19 → 2026-10-26 (+7d) |  | 8d → 23d |
| 5 | **Pipe laying** |  | 2026-10-19 → 2026-10-26 (+7d) |  |  |
| SDR-2-CON-TE-ZA-3850 | HDPE Pipes for Telecom Installation |  | 2026-10-19 → 2026-10-26 (+7d) |  | 50d → 65d |
| 6 | **Backfilling** | 2026-10-20 → 2026-10-27 (+7d) | 2026-11-11 → 2026-11-18 (+7d) |  |  |
| SDR-2-CON-TE-ZA-3860 | Backfilling over HDPE Telecom Pipes | 2026-10-20 → 2026-10-27 (+7d) | 2026-11-11 → 2026-11-18 (+7d) |  | 50d → 65d |
| 7 | **Pulling Cable** | 2026-11-23 → 2026-11-30 (+7d) | 2026-12-16 → 2026-12-23 (+7d) |  |  |
| SDR-2-CON-TE-ZA-3910 | Pulling Cable | 2026-11-23 → 2026-11-30 (+7d) | 2026-12-16 → 2026-12-23 (+7d) |  | 50d → 65d |
| 4 | **Manholes** | 2026-10-19 → 2026-10-20 (+1d) | 2027-02-03 → 2027-02-10 (+7d) |  |  |
| 1 | **Excavation** | 2026-10-19 → 2026-10-20 (+1d) | 2026-11-11 → 2026-11-18 (+7d) |  |  |
| SDR-2-CON-TE-ZA-3870 | Excavation for Telecom Manholes | 2026-10-19 → 2026-10-20 A (+1d) | 2026-11-11 → 2026-11-18 (+7d) | 0% → 25% | 8d → 23d |
| 2 | **Bedding Work** | 2026-11-12 → 2026-10-24 (-19d) | 2026-12-05 → 2026-12-12 (+7d) |  |  |
| SDR-2-CON-TE-ZA-3920 | Sand bedding for Telecom Manhole | 2026-11-12 → 2026-10-24 A (-19d) | 2026-12-05 → 2026-12-12 (+7d) | 0% → 15% | 8d → 23d |
| 3 | **Install Manholes** | 2026-12-06 → 2026-10-24 (-43d) | 2026-12-28 → 2027-01-04 (+7d) |  |  |
| SDR-2-CON-TE-ZA-3880 | Installation of Telecom Manhole | 2026-12-06 → 2026-10-24 A (-43d) | 2026-12-28 → 2027-01-04 (+7d) | 0% → 15% | 8d → 23d |
| 4 | **Testting** | 2026-12-29 → 2027-01-05 (+7d) | 2027-01-11 → 2027-01-18 (+7d) |  |  |
| SDR-2-CON-TE-ZA-3890 | Telecom Manhole finishing works | 2026-12-29 → 2027-01-05 (+7d) | 2027-01-11 → 2027-01-18 (+7d) |  | 8d → 23d |
| 5 | **Backfilling** | 2027-01-12 → 2027-01-19 (+7d) | 2027-02-03 → 2027-02-10 (+7d) |  |  |
| SDR-2-CON-TE-ZA-3900 | Backfilling over Telecom Manhole | 2027-01-12 → 2027-01-19 (+7d) | 2027-02-03 → 2027-02-10 (+7d) |  | 8d → 23d |
| 8 | **TELECOMMUNICATION IN ( PH2-A-MCH0 )** |  | 2027-02-01 → 2027-02-08 (+7d) |  |  |
| 3 | **Ducts** |  | 2026-12-29 → 2027-01-05 (+7d) |  |  |
| 2 | **Excavation** |  | 2026-10-19 → 2026-10-26 (+7d) |  |  |
| SDR-2-CON-TE-ZA-3930 | Excavation for telecom crossing ducts & trenches |  | 2026-10-19 → 2026-10-26 (+7d) |  | 10d → 25d |
| 5 | **Pipe laying** | 2026-10-20 → 2026-10-27 (+7d) | 2026-11-11 → 2026-11-18 (+7d) |  |  |
| SDR-2-CON-TE-ZA-3940 | HDPE Pipes for Telecom Installation | 2026-10-20 → 2026-10-27 (+7d) | 2026-11-11 → 2026-11-18 (+7d) |  | 39d → 54d |
| 6 | **Backfilling** | 2026-11-12 → 2026-11-19 (+7d) | 2026-12-05 → 2026-12-12 (+7d) |  |  |
| SDR-2-CON-TE-ZA-3950 | Backfilling over HDPE Telecom Pipes | 2026-11-12 → 2026-11-19 (+7d) | 2026-12-05 → 2026-12-12 (+7d) |  | 39d → 54d |
| 7 | **Pulling Cable** | 2026-12-06 → 2026-12-13 (+7d) | 2026-12-29 → 2027-01-05 (+7d) |  |  |
| SDR-2-CON-TE-ZA-4000 | Pulling Cable | 2026-12-06 → 2026-12-13 (+7d) | 2026-12-29 → 2027-01-05 (+7d) |  | 39d → 54d |
| 4 | **Manholes** | 2026-10-19 → 2026-10-20 (+1d) | 2027-02-01 → 2027-02-08 (+7d) |  |  |
| 1 | **Excavation** | 2026-10-19 → 2026-10-20 (+1d) | 2026-11-11 → 2026-11-18 (+7d) |  |  |
| SDR-2-CON-TE-ZA-3960 | Excavation for Telecom Manholes | 2026-10-19 → 2026-10-20 A (+1d) | 2026-11-11 → 2026-11-18 (+7d) | 0% → 25% | 10d → 25d |
| 2 | **Bedding Work** | 2026-11-12 → 2026-10-22 (-21d) | 2026-12-05 → 2026-12-12 (+7d) |  |  |
| SDR-2-CON-TE-ZA-4010 | Sand bedding for Telecom Manhole | 2026-11-12 → 2026-10-22 A (-21d) | 2026-12-05 → 2026-12-12 (+7d) | 0% → 10% | 10d → 25d |
| 3 | **Install Manholes** | 2026-12-06 → 2026-10-24 (-43d) | 2026-12-28 → 2027-01-04 (+7d) |  |  |
| SDR-2-CON-TE-ZA-3970 | Installation of Telecom Manhole | 2026-12-06 → 2026-10-24 A (-43d) | 2026-12-28 → 2027-01-04 (+7d) | 0% → 10% | 10d → 25d |
| 4 | **Testting** | 2026-12-29 → 2027-01-05 (+7d) | 2027-01-11 → 2027-01-18 (+7d) |  |  |
| SDR-2-CON-TE-ZA-3980 | Telecom Manhole finishing works | 2026-12-29 → 2027-01-05 (+7d) | 2027-01-11 → 2027-01-18 (+7d) |  | 10d → 25d |
| 5 | **Backfilling** | 2027-01-12 → 2027-01-19 (+7d) | 2027-02-01 → 2027-02-08 (+7d) |  |  |
| SDR-2-CON-TE-ZA-3990 | Backfilling over Telecom Manhole | 2027-01-12 → 2027-01-19 (+7d) | 2027-02-01 → 2027-02-08 (+7d) |  | 10d → 25d |
| 9 | **TELECOMMUNICATION IN ( PH2-ART-MC00 )** |  | 2027-02-01 → 2027-01-14 (-18d) |  |  |
| 3 | **Ducts** |  | 2026-12-28 → 2027-01-04 (+7d) |  |  |
| 2 | **Excavation** |  | 2026-10-19 → 2026-10-26 (+7d) |  |  |
| SDR-2-CON-TE-ZA-4020 | Excavation for telecom crossing ducts & trenches |  | 2026-10-19 → 2026-10-26 (+7d) |  | 10d → 46d |
| 5 | **Pipe laying** | 2026-10-20 → 2026-10-27 (+7d) | 2026-11-11 → 2026-11-18 (+7d) |  |  |
| SDR-2-CON-TE-ZA-4030 | HDPE Pipes for Telecom Installation | 2026-10-20 → 2026-10-27 (+7d) | 2026-11-11 → 2026-11-18 (+7d) |  | 40d → 55d |
| 6 | **Backfilling** | 2026-11-12 → 2026-11-19 (+7d) | 2026-12-03 → 2026-12-10 (+7d) |  |  |
| SDR-2-CON-TE-ZA-4040 | Backfilling over HDPE Telecom Pipes | 2026-11-12 → 2026-11-19 (+7d) | 2026-12-03 → 2026-12-10 (+7d) |  | 40d → 55d |
| 7 | **Pulling Cable** | 2026-12-05 → 2026-12-12 (+7d) | 2026-12-28 → 2027-01-04 (+7d) |  |  |
| SDR-2-CON-TE-ZA-4090 | Pulling Cable | 2026-12-05 → 2026-12-12 (+7d) | 2026-12-28 → 2027-01-04 (+7d) |  | 40d → 55d |
| 4 | **Manholes** | 2026-10-19 → 2026-10-12 (-7d) | 2027-02-01 → 2027-01-14 (-18d) |  |  |
| 1 | **Excavation** | 2026-10-19 → 2026-10-12 (-7d) | 2026-11-11 → 2026-10-22 (-20d) |  |  |
| SDR-2-CON-TE-ZA-4050 | Excavation for Telecom Manholes | 2026-10-19 → 2026-10-12 A (-7d) | 2026-11-11 → 2026-10-22 A (-20d) | 0% → 100% | 10d → none |
| 2 | **Bedding Work** | 2026-11-12 → 2026-10-19 (-24d) | 2026-12-05 → 2026-11-17 (-18d) |  |  |
| SDR-2-CON-TE-ZA-4100 | Sand bedding for Telecom Manhole | 2026-11-12 → 2026-10-19 A (-24d) | 2026-12-05 → 2026-11-17 (-18d) | 0% → 50% | 10d → 46d |
| 3 | **Install Manholes** | 2026-12-06 → 2026-10-22 (-45d) | 2026-12-28 → 2026-12-10 (-18d) |  |  |
| SDR-2-CON-TE-ZA-4060 | Installation of Telecom Manhole | 2026-12-06 → 2026-10-22 A (-45d) | 2026-12-28 → 2026-12-10 (-18d) | 0% → 50% | 10d → 46d |
| 4 | **Testting** | 2026-12-29 → 2026-12-12 (-17d) | 2027-01-11 → 2026-12-24 (-18d) |  |  |
| SDR-2-CON-TE-ZA-4070 | Telecom Manhole finishing works | 2026-12-29 → 2026-12-12 (-17d) | 2027-01-11 → 2026-12-24 (-18d) |  | 10d → 46d |
| 5 | **Backfilling** | 2027-01-12 → 2026-12-26 (-17d) | 2027-02-01 → 2027-01-14 (-18d) |  |  |

| ID | Task | Start | Finish | Complete | Total float |
| --- | --- | --- | --- | --- | --- |
| SDR-2-CON-TE-ZA-4080 | Backfilling over Telecom Manhole | 2027-01-12 → 2026-12-26 (-17d) | 2027-02-01 → 2027-01-14 (-18d) |  | 10d → 46d |
| 10 | **TELECOMMUNICATION IN ( PH2-ART-MC10 )** |  | 2026-12-12 → 2026-12-19 (+7d) |  |  |
| 3 | **Ducts** |  | 2026-12-06 → 2026-12-13 (+7d) |  |  |
| 2 | **Excavation** |  | 2026-10-19 → 2026-10-26 (+7d) |  |  |
| SDR-2-CON-TE-ZA-4110 | Excavation for telecom crossing ducts & trenches |  | 2026-10-19 → 2026-10-26 (+7d) |  | 59d → 74d |
| 5 | **Pipe laying** |  | 2026-10-19 → 2026-10-26 (+7d) |  |  |
| SDR-2-CON-TE-ZA-4120 | HDPE Pipes for Telecom Installation |  | 2026-10-19 → 2026-10-26 (+7d) |  | 59d → 74d |
| 6 | **Backfilling** | 2026-10-20 → 2026-10-27 (+7d) | 2026-11-11 → 2026-11-18 (+7d) |  |  |
| SDR-2-CON-TE-ZA-4130 | Backfilling over HDPE Telecom Pipes | 2026-10-20 → 2026-10-27 (+7d) | 2026-11-11 → 2026-11-18 (+7d) |  | 59d → 74d |
| 7 | **Pulling Cable** | 2026-11-12 → 2026-11-19 (+7d) | 2026-12-06 → 2026-12-13 (+7d) |  |  |
| SDR-2-CON-TE-ZA-4180 | Pulling Cable | 2026-11-12 → 2026-11-19 (+7d) | 2026-12-06 → 2026-12-13 (+7d) |  | 59d → 74d |
| 4 | **Manholes** |  | 2026-12-12 → 2026-12-19 (+7d) |  |  |
| 2 | **Bedding Work** |  | 2026-11-04 → 2026-11-11 (+7d) |  |  |
| SDR-2-CON-TE-ZA-4190 | Sand bedding for Telecom Manhole |  | 2026-11-04 → 2026-11-11 (+7d) | 25% → 60% | 54.46d → 69.46d |
| 3 | **Install Manholes** |  | 2026-11-04 → 2026-11-11 (+7d) |  |  |
| SDR-2-CON-TE-ZA-4150 | Installation of Telecom Manhole |  | 2026-11-04 → 2026-11-11 (+7d) | 50% → 60% | 54.46d → 69.46d |
| 4 | **Testting** | 2026-11-04 → 2026-11-11 (+7d) | 2026-11-17 → 2026-11-24 (+7d) |  |  |
| SDR-2-CON-TE-ZA-4160 | Telecom Manhole finishing works | 2026-11-04 → 2026-11-11 (+7d) | 2026-11-17 → 2026-11-24 (+7d) |  | 54.46d → 69.46d |
| 5 | **Backfilling** | 2026-11-17 → 2026-11-24 (+7d) | 2026-12-12 → 2026-12-19 (+7d) |  |  |
| SDR-2-CON-TE-ZA-4170 | Backfilling over Telecom Manhole | 2026-11-17 → 2026-11-24 (+7d) | 2026-12-12 → 2026-12-19 (+7d) |  | 54.46d → 69.46d |
| ZG | **ZONE G** |  | 2027-03-15 → 2027-03-22 (+7d) |  |  |
| 1 | **Street Lighting Network** |  | 2027-03-15 → 2027-03-22 (+7d) |  |  |
| 5 | **Street Lighting IN ( PH2-G-MCA0 )** |  | 2026-12-14 → 2026-12-21 (+7d) |  |  |
| 10 | **Excavation** |  | 2026-10-19 → 2026-10-26 (+7d) |  |  |
| SDR-2-CON-SL-ZA-3230 | Excavation for LV Cable drawpits & trenches |  | 2026-10-19 → 2026-10-26 (+7d) |  | 56d → 50d |
| 11 | **Install Footings** |  | 2026-10-19 → 2026-10-26 (+7d) |  |  |
| SDR-2-CON-SL-ZA-3240 | Install Footings |  | 2026-10-19 → 2026-10-26 (+7d) |  | 56d → 64d |
| 12 | **Backfilling** | 2026-10-20 → 2026-10-27 (+7d) | 2026-11-11 → 2026-11-18 (+7d) |  |  |
| SDR-2-CON-SL-ZA-3260 | Backfilling over LV Cables of Street lighting | 2026-10-20 → 2026-10-27 (+7d) | 2026-11-11 → 2026-11-18 (+7d) |  | 56d → 64d |
| 13 | **Install pole** | 2026-11-21 → 2026-11-28 (+7d) | 2026-12-14 → 2026-12-21 (+7d) |  |  |
| SDR-2-CON-SL-ZA-3250 | Install Pole | 2026-11-21 → 2026-11-28 (+7d) | 2026-12-14 → 2026-12-21 (+7d) |  | 56d → 64d |
| 6 | **Street Lighting IN ( PH2-G-MCE0 )** |  | 2026-12-29 → 2027-01-05 (+7d) |  |  |
| 10 | **Excavation** |  | 2026-10-19 → 2026-10-26 (+7d) |  |  |
| SDR-2-CON-SL-ZA-3270 | Excavation for LV Cable drawpits & trenches |  | 2026-10-19 → 2026-10-26 (+7d) |  | 33d → 27d |
| 11 | **Install Footings** |  | 2026-10-19 → 2026-10-26 (+7d) |  |  |
| SDR-2-CON-SL-ZA-3280 | Install Footings |  | 2026-10-19 → 2026-10-26 (+7d) |  | 33d → 27d |
| 12 | **Backfilling** | 2026-10-20 → 2026-10-27 (+7d) | 2026-11-11 → 2026-11-18 (+7d) |  |  |
| SDR-2-CON-SL-ZA-3300 | Backfilling over LV Cables of Street lighting | 2026-10-20 → 2026-10-27 (+7d) | 2026-11-11 → 2026-11-18 (+7d) |  | 33d → 27d |
| 13 | **Install pole** | 2026-12-06 → 2026-12-13 (+7d) | 2026-12-29 → 2027-01-05 (+7d) |  |  |
| SDR-2-CON-SL-ZA-3290 | Install Pole | 2026-12-06 → 2026-12-13 (+7d) | 2026-12-29 → 2027-01-05 (+7d) |  | 23d → 17d |
| 7 | **Street Lighting IN ( PH2-G-MCF0 )** |  | 2026-12-17 → 2026-12-24 (+7d) |  |  |
| 10 | **Excavation** |  | 2026-10-19 → 2026-10-26 (+7d) |  |  |
| SDR-2-CON-SL-ZA-3310 | Excavation for LV Cable drawpits & trenches |  | 2026-10-19 → 2026-10-26 (+7d) |  | 56d → 50d |
| 11 | **Install Footings** |  | 2026-10-19 → 2026-10-26 (+7d) |  |  |
| SDR-2-CON-SL-ZA-3320 | Install Footings |  | 2026-10-19 → 2026-10-26 (+7d) |  | 84d → 65d |
| 12 | **Backfilling** | 2026-10-20 → 2026-10-27 (+7d) | 2026-11-11 → 2026-11-18 (+7d) |  |  |
| SDR-2-CON-SL-ZA-3340 | Backfilling over LV Cables of Street lighting | 2026-10-20 → 2026-10-27 (+7d) | 2026-11-11 → 2026-11-18 (+7d) |  | 84d → 65d |
| 13 | **Install pole** | 2026-11-24 → 2026-12-01 (+7d) | 2026-12-17 → 2026-12-24 (+7d) |  |  |
| SDR-2-CON-SL-ZA-3330 | Install Pole | 2026-11-24 → 2026-12-01 (+7d) | 2026-12-17 → 2026-12-24 (+7d) |  | 84d → 65d |
| 4 | **Street Lighting IN ( PH2-G-MCG0 )** |  | 2026-12-17 → 2026-12-24 (+7d) |  |  |
| 10 | **Excavation** |  | 2026-10-19 → 2026-10-26 (+7d) |  |  |
| SDR-2-CON-SL-ZA-3350 | Excavation for LV Cable drawpits & trenches |  | 2026-10-19 → 2026-10-26 (+7d) |  | 56d → 50d |
| 11 | **Install Footings** |  | 2026-10-19 → 2026-10-26 (+7d) |  |  |
| SDR-2-CON-SL-ZA-3360 | Install Footings |  | 2026-10-19 → 2026-10-26 (+7d) |  | 84d → 65d |
| 12 | **Backfilling** |  | 2026-11-11 → 2026-11-18 (+7d) |  |  |
| SDR-2-CON-SL-ZA-3380 | Backfilling over LV Cables of Street lighting |  | 2026-11-11 → 2026-11-18 (+7d) |  | 84d → 65d |
| 13 | **Install pole** | 2026-11-24 → 2026-12-01 (+7d) | 2026-12-17 → 2026-12-24 (+7d) |  |  |
| SDR-2-CON-SL-ZA-3370 | Install Pole | 2026-11-24 → 2026-12-01 (+7d) | 2026-12-17 → 2026-12-24 (+7d) |  | 84d → 65d |
| 1 | **Street Lighting IN ( PH2-G-MCZ0 )** |  | 2026-10-19 → 2026-10-26 (+7d) |  |  |
| 10 | **Excavation** |  | 2026-10-19 → 2026-10-26 (+7d) |  |  |
| SDR-2-CON-SL-ZA-3390 | Excavation for LV Cable drawpits & trenches |  | 2026-10-19 → 2026-10-26 (+7d) |  | 56d → 50d |
| 11 | **Install Footings** |  | 2026-10-19 → 2026-10-26 (+7d) |  |  |
| SDR-2-CON-SL-ZA-3400 | Install Footings |  | 2026-10-19 → 2026-10-26 (+7d) |  | 125d → 116d |
| 12 | **Backfilling** |  | 2026-10-19 → 2026-10-26 (+7d) |  |  |
| SDR-2-CON-SL-ZA-3420 | Backfilling over LV Cables of Street lighting |  | 2026-10-19 → 2026-10-26 (+7d) |  | 125d → 116d |
| 13 | **Install pole** |  | 2026-10-19 → 2026-10-26 (+7d) |  |  |
| SDR-2-CON-SL-ZA-3410 | Install Pole |  | 2026-10-19 → 2026-10-26 (+7d) |  | 125d → 116d |
| 10 | **Lighting Pole Panels** | 2026-10-19 → 2026-10-26 (+7d) | 2027-01-20 → 2027-01-27 (+7d) |  |  |
| 1 | **Excavation** | 2026-10-19 → 2026-10-26 (+7d) | 2026-11-11 → 2026-11-18 (+7d) |  |  |
| SDR-2-CON-SL-ZA-3430 | Street Lighting Panels Excavation | 2026-10-19 → 2026-10-26 (+7d) | 2026-11-11 → 2026-11-18 (+7d) |  | 56d → 50d |

| ID | Task | Start | Finish | Total float |
| --- | --- | --- | --- | --- |
| 2 | **Install Footings** | 2026-11-12 → 2026-11-19 (+7d) | 2026-12-03 → 2026-12-10 (+7d) |  |
| SDR-2-CON-SL-ZA-3440 | Installation Footings Street Lighting Panels | 2026-11-12 → 2026-11-19 (+7d) | 2026-12-03 → 2026-12-10 (+7d) | 74d → 68d |
| 3 | **Backfilling** | 2026-12-05 → 2026-12-12 (+7d) | 2026-12-27 → 2027-01-03 (+7d) |  |
| SDR-2-CON-SL-ZA-3450 | Street Lighting Panels Backfilling | 2026-12-05 → 2026-12-12 (+7d) | 2026-12-27 → 2027-01-03 (+7d) | 74d → 68d |
| 4 | **Install pole** | 2026-12-28 → 2027-01-04 (+7d) | 2027-01-20 → 2027-01-27 (+7d) |  |
| SDR-2-CON-SL-ZA-3460 | Street Lighting Panels Installation | 2026-12-28 → 2027-01-04 (+7d) | 2027-01-20 → 2027-01-27 (+7d) | 74d → 68d |
| 11 | **Ring Main Unit** | 2026-11-12 → 2026-11-19 (+7d) | 2027-01-16 → 2027-01-23 (+7d) |  |
| 1 | **Leveling** | 2026-11-12 → 2026-11-19 (+7d) | 2026-12-05 → 2026-12-12 (+7d) |  |
| SDR-2-CON-SL-ZA-3470 | Ring Main Unit leveling | 2026-11-12 → 2026-11-19 (+7d) | 2026-12-05 → 2026-12-12 (+7d) | 56d → 50d |
| 2 | **Lean Concrete** | 2026-12-06 → 2026-12-13 (+7d) | 2026-12-23 → 2026-12-30 (+7d) |  |
| SDR-2-CON-SL-ZA-3480 | Ring Main Unit Lean Concrete | 2026-12-06 → 2026-12-13 (+7d) | 2026-12-23 → 2026-12-30 (+7d) | 56d → 50d |
| 3 | **Installation** | 2026-12-24 → 2026-12-31 (+7d) | 2027-01-16 → 2027-01-23 (+7d) |  |
| SDR-2-CON-SL-ZA-3490 | Ring Main Unit installation for Street Lighting | 2026-12-24 → 2026-12-31 (+7d) | 2027-01-16 → 2027-01-23 (+7d) | 56d → 50d |
| 12 | **Feeder Pillars** | 2026-10-31 → 2026-11-07 (+7d) | 2027-01-07 → 2027-01-14 (+7d) |  |
| 1 | **Leveling** | 2026-10-31 → 2026-11-07 (+7d) | 2026-11-22 → 2026-11-29 (+7d) |  |
| SDR-2-CON-SL-ZA-3500 | Feeder Pillars Leveling | 2026-10-31 → 2026-11-07 (+7d) | 2026-11-22 → 2026-11-29 (+7d) | 42d → 36d |
| 2 | **Lean Concrete** | 2026-11-23 → 2026-11-30 (+7d) | 2026-12-15 → 2026-12-22 (+7d) |  |
| SDR-2-CON-SL-ZA-3510 | Feeder Pillars Lean Concrete | 2026-11-23 → 2026-11-30 (+7d) | 2026-12-15 → 2026-12-22 (+7d) | 42d → 36d |
| 3 | **Installation** | 2026-12-16 → 2026-12-23 (+7d) | 2027-01-07 → 2027-01-14 (+7d) |  |
| SDR-2-CON-SL-ZA-3520 | Feeder Pillars Installation | 2026-12-16 → 2026-12-23 (+7d) | 2027-01-07 → 2027-01-14 (+7d) | 42d → 36d |
| 13 | **KWH Frame** | 2026-12-19 → 2026-12-26 (+7d) | 2027-02-27 → 2027-03-06 (+7d) |  |
| 1 | **Leveling** | 2026-12-19 → 2026-12-26 (+7d) | 2027-01-10 → 2027-01-17 (+7d) |  |
| SDR-2-CON-SL-ZA-3530 | KWH meter mounting frame Leveling | 2026-12-19 → 2026-12-26 (+7d) | 2027-01-10 → 2027-01-17 (+7d) | 10d → 4d |
| 2 | **Lean Concrete** | 2027-01-11 → 2027-01-18 (+7d) | 2027-02-02 → 2027-02-09 (+7d) |  |
| SDR-2-CON-SL-ZA-3540 | KWH meter mounting frame Lean Concrete | 2027-01-11 → 2027-01-18 (+7d) | 2027-02-02 → 2027-02-09 (+7d) | 10d → 4d |
| 3 | **Installation** | 2027-02-03 → 2027-02-10 (+7d) | 2027-02-27 → 2027-03-06 (+7d) |  |
| SDR-2-CON-SL-ZA-3550 | KWH meter mounting frame installation | 2027-02-03 → 2027-02-10 (+7d) | 2027-02-27 → 2027-03-06 (+7d) | 10d → 4d |
| 14 | **Street Lighting Sub-station** | 2026-12-20 → 2026-12-27 (+7d) | 2027-03-15 → 2027-03-22 (+7d) |  |
| 1 | **Leveling** | 2026-12-20 → 2026-12-27 (+7d) | 2027-01-11 → 2027-01-18 (+7d) |  |
| SDR-2-CON-SL-ZA-3560 | Unit Substation Leveling | 2026-12-20 → 2026-12-27 (+7d) | 2027-01-11 → 2027-01-18 (+7d) | 33d → 27d |
| 2 | **Lean Concrete** | 2027-01-12 → 2027-01-19 (+7d) | 2027-02-02 → 2027-02-09 (+7d) |  |
| SDR-2-CON-SL-ZA-3570 | Unit Substation Lean Concrete | 2027-01-12 → 2027-01-19 (+7d) | 2027-02-02 → 2027-02-09 (+7d) | 33d → 27d |
| 3 | **Installation** | 2027-02-15 → 2027-02-23 (+8d) | 2027-03-15 → 2027-03-22 (+7d) |  |
| SDR-2-CON-SL-ZA-3580 | Unit Substation Install for Street Lighting | 2027-02-15 → 2027-02-23 (+8d) | 2027-03-15 → 2027-03-22 (+7d) | 33d → 27d |
| 2 | **MV Network** |  | 2026-11-23 → 2026-11-30 (+7d) |  |
| 1 | **LOOP 1** |  | 2026-11-23 → 2026-11-30 (+7d) |  |
| 6 | **Excavation** |  | 2026-10-19 → 2026-10-26 (+7d) |  |
| SDR-2-CON-MV-ZA-1280 | Excavation Works |  | 2026-10-19 → 2026-10-26 (+7d) | 56d → 55d |
| 7 | **Pipe laying** |  | 2026-10-19 → 2026-10-26 (+7d) |  |
| SDR-2-CON-MV-ZA-1290 | Pipe Laying |  | 2026-10-19 → 2026-10-26 (+7d) | 60d → 55d |
| 8 | **Backfilling** |  | 2026-10-19 → 2026-10-26 (+7d) |  |
| SDR-2-CON-MV-ZA-1310 | Backfilling Works |  | 2026-10-19 → 2026-10-26 (+7d) | 60d → 55d |
| 9 | **Pulling Cable** | 2026-11-01 → 2026-11-08 (+7d) | 2026-11-23 → 2026-11-30 (+7d) |  |
| SDR-2-CON-MV-ZA-1300 | Pulling Cable | 2026-11-01 → 2026-11-08 (+7d) | 2026-11-23 → 2026-11-30 (+7d) | 60d → 55d |
| 2 | **LOOP 2** |  | 2026-11-23 → 2026-11-30 (+7d) |  |
| 6 | **Excavation** |  | 2026-10-19 → 2026-10-26 (+7d) |  |
| SDR-2-CON-MV-ZA-1320 | Excavation Works |  | 2026-10-19 → 2026-10-26 (+7d) | 56d → 64d |
| 7 | **Pipe laying** |  | 2026-10-19 → 2026-10-26 (+7d) |  |
| SDR-2-CON-MV-ZA-1330 | Pipe Laying |  | 2026-10-19 → 2026-10-26 (+7d) | 56d → 64d |
| 8 | **Backfilling** |  | 2026-10-19 → 2026-10-26 (+7d) |  |
| SDR-2-CON-MV-ZA-1350 | Backfilling Works |  | 2026-10-19 → 2026-10-26 (+7d) | 56d → 64d |
| 9 | **Pulling Cable** | 2026-11-01 → 2026-11-08 (+7d) | 2026-11-23 → 2026-11-30 (+7d) |  |
| SDR-2-CON-MV-ZA-1340 | Pulling Cable | 2026-11-01 → 2026-11-08 (+7d) | 2026-11-23 → 2026-11-30 (+7d) | 56d → 64d |
| 3 | **TELECOMMUNICATIONS Works** |  | 2026-12-05 → 2026-12-12 (+7d) |  |
| 5 | **TELECOMMUNICATION IN ( PH2-G-MCA0 )** |  | 2026-12-05 → 2026-12-12 (+7d) |  |
| 3 | **Ducts** |  | 2026-12-05 → 2026-12-12 (+7d) |  |
| 2 | **Excavation** |  | 2026-10-19 → 2026-10-26 (+7d) |  |
| SDR-2-CON-TE-ZA-4200 | Excavation for telecom crossing ducts & trenches |  | 2026-10-19 → 2026-10-26 (+7d) | 46d → 54d |
| 5 | **Pipe laying** |  | 2026-10-19 → 2026-10-26 (+7d) |  |
| SDR-2-CON-TE-ZA-4210 | HDPE Pipes for Telecom Installation |  | 2026-10-19 → 2026-10-26 (+7d) | 46d → 54d |
| 6 | **Backfilling** | 2026-10-20 → 2026-10-27 (+7d) | 2026-11-11 → 2026-11-18 (+7d) |  |
| SDR-2-CON-TE-ZA-4220 | Backfilling over HDPE Telecom Pipes | 2026-10-20 → 2026-10-27 (+7d) | 2026-11-11 → 2026-11-18 (+7d) | 46d → 54d |
| 7 | **Pulling Cable** | 2026-11-12 → 2026-11-19 (+7d) | 2026-12-05 → 2026-12-12 (+7d) |  |
| SDR-2-CON-TE-ZA-4270 | Pulling Cable | 2026-11-12 → 2026-11-19 (+7d) | 2026-12-05 → 2026-12-12 (+7d) | 46d → 54d |
| 4 | **Manholes** |  | 2026-11-11 → 2026-11-18 (+7d) |  |
| 1 | **Excavation** |  | 2026-10-19 → 2026-10-26 (+7d) |  |
| SDR-2-CON-TE-ZA-4230 | Excavation for Telecom Manholes |  | 2026-10-19 → 2026-10-26 (+7d) | 66d → 74d |
| 2 | **Bedding Work** |  | 2026-10-19 → 2026-10-26 (+7d) |  |
| SDR-2-CON-TE-ZA-4280 | Sand bedding for Telecom Manhole |  | 2026-10-19 → 2026-10-26 (+7d) | 66d → 74d |
| 3 | **Install Manholes** |  | 2026-10-19 → 2026-10-26 (+7d) |  |

| ID | Task | Start | Finish | Total float |
| --- | --- | --- | --- | --- |
| SDR-2-CON-TE-ZA-4240 | Installation of Telecom Manhole |  | 2026-10-19 → 2026-10-26 (+7d) | 66d → 74d |
| 4 | **Testting** |  | 2026-10-19 → 2026-10-26 (+7d) |  |
| SDR-2-CON-TE-ZA-4250 | Telecom Manhole finishing works |  | 2026-10-19 → 2026-10-26 (+7d) | 66d → 74d |
| 5 | **Backfilling** | 2026-10-20 → 2026-10-27 (+7d) | 2026-11-11 → 2026-11-18 (+7d) |  |
| SDR-2-CON-TE-ZA-4260 | Backfilling over Telecom Manhole | 2026-10-20 → 2026-10-27 (+7d) | 2026-11-11 → 2026-11-18 (+7d) | 66d → 74d |
| 6 | **TELECOMMUNICATION IN ( PH2-G-MCE0 )** |  | 2026-11-21 → 2026-11-28 (+7d) |  |
| 3 | **Ducts** |  | 2026-10-19 → 2026-10-26 (+7d) |  |
| 5 | **Pipe laying** |  | 2026-10-19 → 2026-10-26 (+7d) |  |
| SDR-2-CON-TE-ZA-4300 | HDPE Pipes for Telecom Installation |  | 2026-10-19 → 2026-10-26 (+7d) | 76d → 78d |
| 6 | **Backfilling** |  | 2026-10-19 → 2026-10-26 (+7d) |  |
| SDR-2-CON-TE-ZA-4310 | Backfilling over HDPE Telecom Pipes |  | 2026-10-19 → 2026-10-26 (+7d) | 76d → 78d |
| 7 | **Pulling Cable** |  | 2026-10-19 → 2026-10-26 (+7d) |  |
| SDR-2-CON-TE-ZA-4360 | Pulling Cable |  | 2026-10-19 → 2026-10-26 (+7d) | 76d → 78d |
| 4 | **Manholes** |  | 2026-11-21 → 2026-11-28 (+7d) |  |
| 1 | **Excavation** |  | 2026-10-19 → 2026-10-26 (+7d) |  |
| SDR-2-CON-TE-ZA-4320 | Excavation for Telecom Manholes |  | 2026-10-19 → 2026-10-26 (+7d) | 58d → 66d |
| 2 | **Bedding Work** |  | 2026-10-19 → 2026-10-26 (+7d) |  |
| SDR-2-CON-TE-ZA-4370 | Sand bedding for Telecom Manhole |  | 2026-10-19 → 2026-10-26 (+7d) | 58d → 66d |
| 3 | **Install Manholes** |  | 2026-10-19 → 2026-10-26 (+7d) |  |
| SDR-2-CON-TE-ZA-4330 | Installation of Telecom Manhole |  | 2026-10-19 → 2026-10-26 (+7d) | 58d → 66d |
| 4 | **Testting** | 2026-10-20 → 2026-10-27 (+7d) | 2026-10-27 → 2026-11-03 (+7d) |  |
| SDR-2-CON-TE-ZA-4340 | Telecom Manhole finishing works | 2026-10-20 → 2026-10-27 (+7d) | 2026-10-27 → 2026-11-03 (+7d) | 58d → 66d |
| 5 | **Backfilling** | 2026-10-28 → 2026-11-04 (+7d) | 2026-11-21 → 2026-11-28 (+7d) |  |
| SDR-2-CON-TE-ZA-4350 | Backfilling over Telecom Manhole | 2026-10-28 → 2026-11-04 (+7d) | 2026-11-21 → 2026-11-28 (+7d) | 58d → 66d |
| 7 | **TELECOMMUNICATION IN ( PH2-G-MCF0 )** |  | 2026-11-19 → 2026-11-26 (+7d) |  |
| 3 | **Ducts** |  | 2026-10-19 → 2026-10-26 (+7d) |  |
| 2 | **Excavation** |  | 2026-10-19 → 2026-10-26 (+7d) |  |
| SDR-2-CON-TE-ZA-4380 | Excavation for telecom crossing ducts & trenches |  | 2026-10-19 → 2026-10-26 (+7d) | 84d → 78d |
| 5 | **Pipe laying** |  | 2026-10-19 → 2026-10-26 (+7d) |  |
| SDR-2-CON-TE-ZA-4390 | HDPE Pipes for Telecom Installation |  | 2026-10-19 → 2026-10-26 (+7d) | 111d → 105d |
| 6 | **Backfilling** |  | 2026-10-19 → 2026-10-26 (+7d) |  |
| SDR-2-CON-TE-ZA-4400 | Backfilling over HDPE Telecom Pipes |  | 2026-10-19 → 2026-10-26 (+7d) | 111d → 105d |
| 7 | **Pulling Cable** |  | 2026-10-19 → 2026-10-26 (+7d) |  |
| SDR-2-CON-TE-ZA-4450 | Pulling Cable |  | 2026-10-19 → 2026-10-26 (+7d) | 111d → 105d |
| 4 | **Manholes** |  | 2026-11-19 → 2026-11-26 (+7d) |  |
| 1 | **Excavation** |  | 2026-10-19 → 2026-10-26 (+7d) |  |
| SDR-2-CON-TE-ZA-4410 | Excavation for Telecom Manholes |  | 2026-10-19 → 2026-10-26 (+7d) | 84d → 78d |
| 2 | **Bedding Work** |  | 2026-10-19 → 2026-10-26 (+7d) |  |
| SDR-2-CON-TE-ZA-4460 | Sand bedding for Telecom Manhole |  | 2026-10-19 → 2026-10-26 (+7d) | 84d → 78d |
| 3 | **Install Manholes** |  | 2026-10-19 → 2026-10-26 (+7d) |  |
| SDR-2-CON-TE-ZA-4420 | Installation of Telecom Manhole |  | 2026-10-19 → 2026-10-26 (+7d) | 84d → 78d |
| 4 | **Testting** | 2026-10-20 → 2026-10-27 (+7d) | 2026-10-27 → 2026-11-03 (+7d) |  |
| SDR-2-CON-TE-ZA-4430 | Telecom Manhole finishing works | 2026-10-20 → 2026-10-27 (+7d) | 2026-10-27 → 2026-11-03 (+7d) | 84d → 78d |
| 5 | **Backfilling** | 2026-10-28 → 2026-11-04 (+7d) | 2026-11-19 → 2026-11-26 (+7d) |  |
| SDR-2-CON-TE-ZA-4440 | Backfilling over Telecom Manhole | 2026-10-28 → 2026-11-04 (+7d) | 2026-11-19 → 2026-11-26 (+7d) | 84d → 78d |
| 4 | **TELECOMMUNICATION IN ( PH2-G-MCG0 )** |  | 2026-12-02 → 2026-12-09 (+7d) |  |
| 3 | **Ducts** |  | 2026-10-19 → 2026-10-26 (+7d) |  |
| 2 | **Excavation** |  | 2026-10-19 → 2026-10-26 (+7d) |  |
| SDR-2-CON-TE-ZA-4470 | Excavation for telecom crossing ducts & trenches |  | 2026-10-19 → 2026-10-26 (+7d) | 76d → 78d |
| 5 | **Pipe laying** |  | 2026-10-19 → 2026-10-26 (+7d) |  |
| SDR-2-CON-TE-ZA-4480 | HDPE Pipes for Telecom Installation |  | 2026-10-19 → 2026-10-26 (+7d) | 76d → 78d |
| 6 | **Backfilling** |  | 2026-10-19 → 2026-10-26 (+7d) |  |
| SDR-2-CON-TE-ZA-4490 | Backfilling over HDPE Telecom Pipes |  | 2026-10-19 → 2026-10-26 (+7d) | 76d → 78d |
| 7 | **Pulling Cable** |  | 2026-10-19 → 2026-10-26 (+7d) |  |
| SDR-2-CON-TE-ZA-4540 | Pulling Cable |  | 2026-10-19 → 2026-10-26 (+7d) | 76d → 78d |
| 4 | **Manholes** |  | 2026-12-02 → 2026-12-09 (+7d) |  |
| 1 | **Excavation** |  | 2026-10-19 → 2026-10-26 (+7d) |  |
| SDR-2-CON-TE-ZA-4500 | Excavation for Telecom Manholes |  | 2026-10-19 → 2026-10-26 (+7d) | 116d → 110d |
| 2 | **Bedding Work** |  | 2026-10-19 → 2026-10-26 (+7d) |  |
| SDR-2-CON-TE-ZA-4550 | Sand bedding for Telecom Manhole |  | 2026-10-19 → 2026-10-26 (+7d) | 116d → 110d |
| 3 | **Install Manholes** |  | 2026-10-19 → 2026-10-26 (+7d) |  |
| SDR-2-CON-TE-ZA-4510 | Installation of Telecom Manhole |  | 2026-10-19 → 2026-10-26 (+7d) | 116d → 110d |
| 4 | **Testting** | 2026-10-20 → 2026-10-27 (+7d) | 2026-10-27 → 2026-11-03 (+7d) |  |
| SDR-2-CON-TE-ZA-4520 | Telecom Manhole finishing works | 2026-10-20 → 2026-10-27 (+7d) | 2026-10-27 → 2026-11-03 (+7d) | 116d → 110d |
| 5 | **Backfilling** | 2026-11-09 → 2026-11-16 (+7d) | 2026-12-02 → 2026-12-09 (+7d) |  |
| SDR-2-CON-TE-ZA-4530 | Backfilling over Telecom Manhole | 2026-11-09 → 2026-11-16 (+7d) | 2026-12-02 → 2026-12-09 (+7d) | 116d → 110d |
| ZA | **ZONE A** |  | 2027-07-05 → 2027-06-30 (-5d) |  |
| 2 | **IRRIGATION WORKS** |  | 2027-07-05 → 2027-06-30 (-5d) |  |
| 1 | **IRRIGATION WORKS IN ( PH2-COL-MC10 )** |  | 2027-07-05 → 2027-06-29 (-6d) |  |
| 7 | **Pre install** |  | 2027-05-05 → 2027-05-08 (+3d) |  |

| ID | Task | Start | Finish | Total float | Predecessors |
| --- | --- | --- | --- | --- | --- |
| SDR-2-CON-IR-ZA-1000 | Pre Install for irrigation Works |  | 2027-05-05 → 2027-05-08 (+3d) | 2d → 0d | SDR-2-CON-SE-ZA-1490, SDR-2-CON-SE-ZA-1550, SDR-2-CON-SE-ZA-1560, SDR-2-CON-SE-ZA-1620, SDR-2-CON-SE-ZA-1590, SDR-2-CON-SE-ZA-1650, SDR-2-CON-SE-ZA-1660, SDR-2-CON-SE-ZA-1720, SDR-2-CON-SE-ZA-1690, SDR-2-CON-SE-ZA-1750, SDR-2-CON-SE-ZA-1760, SDR-2-CON-SE-ZA-1820, SDR-2-CON-SE-ZA-1790, SDR-2-CON-SE-ZA-1850, SDR-2-CON-SE-ZA-1860, SDR-2-CON-SE-ZA-1920, SDR-2-CON-SE-ZA-1890, SDR-2-CON-SE-ZA-1950, SDR-2-CON-SE-ZA-1960, SDR-2-CON-SE-ZA-2020, SDR-2-CON-SE-ZA-1990, SDR-2-CON-SE-ZA-2050, SDR-2-CON-SE-ZA-2060, SDR-2-CON-SE-ZA-2120, SDR-2-CON-SE-ZA-2070, SDR-2-CON-SE-ZA-2080, SDR-2-CON-SE-ZA-2130, SDR-2-CON-SE-ZA-2090, SDR-2-CON-SE-ZA-2150, SDR-2-CON-SE-ZA-2100, SDR-2-CON-SE-ZA-2140, SDR-2-CON-SE-ZA-2160, SDR-2-CON-SE-ZA-2220, SDR-2-CON-SE-ZA-2170, SDR-2-CON-SE-ZA-2230, SDR-2-CON-SE-ZA-2190, SDR-2-CON-SE-ZA-2250, SDR-2-CON-SE-ZA-2200, SDR-2-CON-SE-ZA-2240, SDR-2-CON-SE-ZA-2260, SDR-2-CON-SE-ZA-2320, SDR-2-CON-SE-ZA-2270, SDR-2-CON-SE-ZA-2280, SDR-2-CON-SE-ZA-2330, SDR-2-CON-SE-ZA-2290, SDR-2-CON-SE-ZA-2350, SDR-2-CON-SE-ZA-2300, SDR-2-CON-SE-ZA-2340, SDR-2-CON-SE-ZA-2360, SDR-2-CON-SE-ZA-2420, SDR-2-CON-SE-ZA-2370, SDR-2-CON-SE-ZA-2380, SDR-2-CON-SE-ZA-2430, SDR-2-CON-SE-ZA-2390, SDR-2-CON-SE-ZA-2450, SDR-2-CON-SE-ZA-2400, SDR-2-CON-SE-ZA-2440, SDR-2-CON-PW-ZG-1000, SDR-2-CON-PW-ZA-2910, SDR-2-CON-PW-ZA-3010, SDR-2-CON-PW-ZA-3020, SDR-2-CON-PW-ZA-3110, SDR-2-CON-PW-ZA-3120, SDR-2-CON-PW-ZA-2560, SDR-2-CON-TE-ZA-4290, SDR-2-CON-RW-ZA-1720, SDR-2-CON-RW-ZA-1720 FF, SDR-2-CON-ST-ZA-6120, SDR-2-CON-SE-ZA-1010 FF, SDR-2-CON-SE-ZA-1020 FF, SDR-2-CON-SE-ZA-1040 FF, SDR-2-CON-SE-ZA-1050 FF, SDR-2-CON-SE-ZA-1470 FF, SDR-2-CON-SE-ZA-1480 FF, SDR-2-CON-SE-ZA-1500 FF, SDR-2-CON-SE-ZA-1510 FF, SDR-2-CON-SE-ZA-1570 FF, SDR-2-CON-SE-ZA-1580 FF, SDR-2-CON-SE-ZA-1600 FF, SDR-2-CON-SE-ZA-1610 FF, SDR-2-CON-SE-ZA-1670 FF, SDR-2-CON-SE-ZA-1680 FF, SDR-2-CON-SE-ZA-1700 FF, SDR-2-CON-SE-ZA-1710 FF, SDR-2-CON-SE-ZA-1770 FF, SDR-2-CON-SE-ZA-1780 FF, SDR-2-CON-SE-ZA-1800 FF, SDR-2-CON-SE-ZA-1810 FF, SDR-2-CON-SE-ZA-1870 FF, SDR-2-CON-SE-ZA-1880 FF, SDR-2-CON-SE-ZA-1900 FF, SDR-2-CON-SE-ZA-1910 FF, SDR-2-CON-SE-ZA-1970 FF, SDR-2-CON-SE-ZA-2000 FF, SDR-2-CON-SE-ZA-2110 FF, SDR-2-CON-SE-ZA-2180 FF, SDR-2-CON-SE-ZA-2210 FF, SDR-2-CON-SE-ZA-2310 FF, SDR-2-CON-SE-ZA-2410 FF, SDR-2-CON-TS-ZA-3100 FF, SDR-2-CON-TS-ZA-3130 FF, SDR-2-CON-TS-ZA-3110 FF, SDR-2-CON-TS-ZA-3120 FF, SDR-2-CON-TS-ZA-3140 FF, SDR-2-CON-TS-ZA-2300 FF, SDR-2-CON-TS-ZA-2380 FF, SDR-2-CON-TS-ZA-2310 FF, SDR-2-CON-TS-ZA-2400 FF, SDR-2-CON-TS-ZA-2900 FF, SDR-2-CON-TS-ZA-3000 FF, SDR-2-CON-TS-ZA-2500 FF, SDR-2-CON-PW-ZA-1000 FF, SDR-2-CON-PW-ZA-2200 FF, SDR-2-CON-PW-ZA-1010 FF, SDR-2-CON-PW-ZA-2260 FF, SDR-2-CON-PW-ZA-2340 FF, SDR-2-CON-PW-ZA-2270 FF, SDR-2-CON-PW-ZA-2330 FF, SDR-2-CON-PW-ZA-2350 FF, SDR-2-CON-PW-ZG-1500 FF, SDR-2-CON-PW-ZG-1010 FF, SDR-2-CON-PW-ZA-2940 FF, SDR-2-CON-PW-ZA-2920 FF, SDR-2-CON-PW-ZA-3040 FF, SDR-2-CON-PW-ZA-3140 FF, SDR-2-CON-PW-ZA-2640 FF, SDR-2-CON-PW-ZA-2570 FF, SDR-2-CON-SL-ZA-1000 FF, SDR-2-CON-SL-ZA-2870 FF, SDR-2-CON-SL-ZA-2880 FF, SDR-2-CON-SL-ZA-1300 FF, SDR-2-CON-SL-ZA-1310 FF, SDR-2-CON-SL-ZA-2950 FF, SDR-2-CON-SL-ZA-2960 FF, SDR-2-CON-SL-ZA-2990 FF, SDR-2-CON-SL-ZA-3000 FF, SDR-2-CON-SL-ZA-3030 FF, SDR-2-CON-SL-ZA-3040 FF, SDR-2-CON-SL-ZA-3070 FF, SDR-2-CON-SL-ZA-3080 FF, SDR-2-CON-SL-ZA-3110 FF, SDR-2-CON-SL-ZA-3120 FF, SDR-2-CON-SL-ZA-3150 FF, SDR-2-CON-SL-ZA-3160 FF, SDR-2-CON-SL-ZA-3190 FF, SDR-2-CON-SL-ZA-3200 FF, SDR-2-CON-SL-ZA-2910 FF, SDR-2-CON-SL-ZA-2920 FF, SDR-2-CON-MV-ZA-1000 FF, SDR-2-CON-MV-ZA-1070 FF, SDR-2-CON-MV-ZA-1150 FF, SDR-2-CON-MV-ZA-1160 FF, SDR-2-CON-MV-ZA-1170 FF, SDR-2-CON-MV-ZA-1200 FF, SDR-2-CON-MV-ZA-1210 FF, SDR-2-CON-MV-ZA-1240 FF, SDR-2-CON-MV-ZA-1250 FF, SDR-2-CON-TE-ZA-1030 FF, SDR-2-CON-TE-ZA-1850 FF, SDR-2-CON-TE-ZA-3210 FF, SDR-2-CON-TE-ZA-3220 FF, SDR-2-CON-TE-ZA-3230 FF, SDR-2-CON-TE-ZA-3240 FF, SDR-2-CON-TE-ZA-3290 FF, SDR-2-CON-TE-ZA-3250 FF, SDR-2-CON-TE-ZA-3300 FF, SDR-2-CON-TE-ZA-3330 FF, SDR-2-CON-TE-ZA-3390 FF, SDR-2-CON-TE-ZA-3420 FF, SDR-2-CON-TE-ZA-3480 FF, SDR-2-CON-TE-ZA-3490 FF, SDR-2-CON-TE-ZA-3510 FF, SDR-2-CON-TE-ZA-3560 FF, SDR-2-CON-TE-ZA-3570 FF, SDR-2-CON-TE-ZA-3580 FF, SDR-2-CON-TE-ZA-3600 FF, SDR-2-CON-TE-ZA-3650 FF, SDR-2-CON-TE-ZA-3660 FF, SDR-2-CON-TE-ZA-3670 FF, SDR-2-CON-TE-ZA-3750 FF, SDR-2-CON-TE-ZA-3760 FF, SDR-2-CON-TE-ZA-3840 FF, SDR-2-CON-TE-ZA-3850 FF, SDR-2-CON-TE-ZA-3930 FF, SDR-2-CON-TE-ZA-4020 FF, SDR-2-CON-TE-ZA-4110 FF, SDR-2-CON-TE-ZA-4120 FF, SDR-2-CON-TE-ZA-4140 FF, SDR-2-CON-TE-ZA-4190 FF, SDR-2-CON-TE-ZA-4150 FF, SDR-2-CON-SL-ZA-3230 FF, SDR-2-CON-SL-ZA-3240 FF, SDR-2-CON-SL-ZA-3270 FF, SDR-2-CON-SL-ZA-3280 FF, SDR-2-CON-SL-ZA-3310 FF, SDR-2-CON-SL-ZA-3320 FF, SDR-2-CON-SL-ZA-3350 FF, SDR-2-CON-SL-ZA-3360 FF, SDR-2-CON-SL-ZA-3390 FF, SDR-2-CON-SL-ZA-3400 FF, SDR-2-CON-SL-ZA-3420 FF, SDR-2-CON-SL-ZA-3410 FF, SDR-2-CON-MV-ZA-1280 FF, SDR-2-CON-MV-ZA-1290 FF, SDR-2-CON-MV-ZA-1310 FF, SDR-2-CON-MV-ZA-1320 FF, SDR-2-CON-MV-ZA-1330 FF, SDR-2-CON-MV-ZA-1350 FF, SDR-2-CON-TE-ZA-4200 FF, SDR-2-CON-TE-ZA-4210 FF, SDR-2-CON-TE-ZA-4230 FF, SDR-2-CON-TE-ZA-4280 FF, SDR-2-CON-TE-ZA-4240 FF, SDR-2-CON-TE-ZA-4250 FF, SDR-2-CON-TE-ZA-4300 FF, SDR-2-CON-TE-ZA-4310 FF, SDR-2-CON-TE-ZA-4360 FF, SDR-2-CON-TE-ZA-4320 FF, SDR-2-CON-TE-ZA-4370 FF, SDR-2-CON-TE-ZA-4330 FF, SDR-2-CON-TE-ZA-4380 FF, SDR-2-CON-TE-ZA-4390 FF, SDR-2-CON-TE-ZA-4400 FF, SDR-2-CON-TE-ZA-4450 FF, SDR-2-CON-TE-ZA-4410 FF, SDR-2-CON-TE-ZA-4460 FF, SDR-2-CON-TE-ZA-4420 FF, SDR-2-CON-TE-ZA-4470 FF, SDR-2-CON-TE-ZA-4480 FF, SDR-2-CON-TE-ZA-4490 FF, SDR-2-CON-TE-ZA-4540 FF, SDR-2-CON-TE-ZA-4500 FF, SDR-2-CON-TE-ZA-4550 FF, SDR-2-CON-TE-ZA-4510 FF, SDR-2-CON-CC-ZA-1000 FF, SDR-2-CON-CC-ZA-1030 FF, SDR-2-CON-CC-ZA-1080 FF, SDR-2-CON-CC-ZA-1090 FF, SDR-2-CON-CC-ZA-1240 FF, SDR-2-CON-CC-ZA-1250 FF, SDR-2-CON-CC-ZA-1380 FF, SDR-2-CON-CC-ZA-1390 FF, SDR-2-CON-CC-ZA-1670 FF, SDR-2-CON-CC-ZA-1700 FF, SDR-2-CON-CC-ZA-1750 FF, SDR-2-CON-CC-ZA-1790 FF, SDR-2-CON-CC-ZA-1830 FF, SDR-2-CON-ST-ZA-4020 FF, SDR-2-CON-SE-ZA-1430 FF, SDR-2-CON-SE-ZA-1440 FF, SDR-2-CON-SE-ZA-1530 FF, SDR-2-CON-SE-ZA-1540 FF, SDR-2-CON-SE-ZA-1630 FF, SDR-2-CON-SE-ZA-1730 FF, SDR-2-CON-SE-ZA-1740 FF, SDR-2-CON-SE-ZA-1830 FF, SDR-2-CON-SE-ZA-1840 FF, SDR-2-CON-SE-ZA-1930 FF, SDR-2-CON-SE-ZA-1940 FF, SDR-2-CON-SE-ZA-1980 FF, SDR-2-CON-SE-ZA-2030 FF, SDR-2-CON-SE-ZA-2010 FF, SDR-2-CON-SE-ZA-2040 FF, SDR-2-CON-TS-ZA-1900 FF, SDR-2-CON-TS-ZA-1010 FF, SDR-2-CON-TS-ZA-1080 FF, SDR-2-CON-TS-ZA-1910 FF, SDR-2-CON-TS-ZA-1040 FF, SDR-2-CON-TS-ZA-1020 FF, SDR-2-CON-TS-ZA-1050 FF, SDR-2-CON-TS-ZA-1060 FF, SDR-2-CON-TS-ZA-1070 FF, SDR-2-CON-TS-ZA-2200 FF, SDR-2-CON-TS-ZA-2280 FF, SDR-2-CON-TS-ZA-2210 FF, SDR-2-CON-TS-ZA-2270 FF, SDR-2-CON-TS-ZA-2290 FF, SDR-2-CON-TS-ZA-2230 FF, SDR-2-CON-TS-ZA-2240 FF, SDR-2-CON-TS-ZA-2250 FF, SDR-2-CON-TS-ZA-2260 FF, SDR-2-CON-TS-ZA-3240 FF, SDR-2-CON-TS-ZA-1920 FF, SDR-2-CON-TS-ZA-1190 FF, SDR-2-CON-TS-ZA-1260 FF, SDR-2-CON-TS-ZA-1930 FF, SDR-2-CON-TS-ZA-2010 FF, SDR-2-CON-TS-ZA-2000 FF, SDR-2-CON-TS-ZA-2020 FF, SDR-2-CON-TS-ZA-2030 FF, SDR-2-CON-TS-ZA-2040 FF, SDR-2-CON-TS-ZA-3260 FF, SDR-2-CON-TS-ZA-1940 FF, SDR-2-CON-TS-ZA-1280 FF, SDR-2-CON-TS-ZA-1350 FF, SDR-2-CON-TS-ZA-1950 FF, SDR-2-CON-TS-ZA-2060 FF, SDR-2-CON-TS-ZA-2050 FF, SDR-2-CON-TS-ZA-2070 FF, SDR-2-CON-TS-ZA-2080 FF, SDR-2-CON-TS-ZA-2090 FF, SDR-2-CON-TS-ZA-2660 FF, SDR-2-CON-TS-ZA-2650 FF, SDR-2-CON-TS-ZA-2670 FF, SDR-2-CON-TS-ZA-2680 FF, SDR-2-CON-TS-ZA-2690 FF, SDR-2-CON-TS-ZA-2700 FF, SDR-2-CON-TS-ZA-2730 FF, SDR-2-CON-TS-ZA-2710 FF, SDR-2-CON-TS-ZA-2720 FF, SDR-2-CON-TS-ZA-2740 FF, SDR-2-CON-TS-ZA-2760 FF, SDR-2-CON-TS-ZA-2750 FF, SDR-2-CON-TS-ZA-2770 FF, SDR-2-CON-TS-ZA-2780 FF, SDR-2-CON-TS-ZA-2800 FF, SDR-2-CON-TS-ZA-2830 FF, SDR-2-CON-TS-ZA-2810 FF, SDR-2-CON-TS-ZA-2820 FF, SDR-2-CON-TS-ZA-2840 FF, SDR-2-CON-TS-ZA-2860 FF, SDR-2-CON-TS-ZA-2850 FF, SDR-2-CON-TS-ZA-2870 FF, SDR-2-CON-TS-ZA-2880 FF, SDR-2-CON-TS-ZA-2890 FF, SDR-2-CON-TS-ZA-1630 FF, SDR-2-CON-TS-ZA-1960 FF, SDR-2-CON-TS-ZA-1640 FF, SDR-2-CON-TS-ZA-1710 FF, SDR-2-CON-TS-ZA-1970 FF, SDR-2-CON-TS-ZA-2110 FF, SDR-2-CON-TS-ZA-2100 FF, SDR-2-CON-TS-ZA-2120 FF, SDR-2-CON-TS-ZA-2130 FF, SDR-2-CON-TS-ZA-2140 FF, SDR-2-CON-TS-ZA-1720 FF, SDR-2-CON-TS-ZA-1980 FF, SDR-2-CON-TS-ZA-1730 FF, SDR-2-CON-TS-ZA-1800 FF, SDR-2-CON-TS-ZA-1990 FF, SDR-2-CON-TS-ZA-2160 FF, SDR-2-CON-TS-ZA-2150 FF, SDR-2-CON-TS-ZA-2170 FF, SDR-2-CON-TS-ZA-2180 FF, SDR-2-CON-TS-ZA-2190 FF, SDR-2-CON-TS-ZA-3160 FF, SDR-2-CON-TS-ZA-3150 FF, SDR-2-CON-TS-ZA-3170 FF, SDR-2-CON-TS-ZA-3180 FF, SDR-2-CON-TS-ZA-3190 FF, SDR-2-CON-TS-ZA-2370 FF, SDR-2-CON-TS-ZA-2390 FF, SDR-2-CON-TS-ZA-2330 FF, SDR-2-CON-TS-ZA-2320 FF, SDR-2-CON-TS-ZA-2340 FF, SDR-2-CON-TS-ZA-2350 FF, SDR-2-CON-TS-ZA-2360 FF, SDR-2-CON-TS-ZA-2430 FF, SDR-2-CON-TS-ZA-2410 FF, SDR-2-CON-TS-ZA-2420 FF, SDR-2-CON-TS-ZA-2440 FF, SDR-2-CON-TS-ZA-2460 FF, SDR-2-CON-TS-ZA-2450 FF, SDR-2-CON-TS-ZA-2930 FF, SDR-2-CON-TS-ZA-2910 FF, SDR-2-CON-TS-ZA-2920 FF, SDR-2-CON-TS-ZA-2940 FF, SDR-2-CON-TS-ZA-2960 FF, SDR-2-CON-TS-ZA-2950 FF, SDR-2-CON-TS-ZA-2970 FF, SDR-2-CON-TS-ZA-2980 FF, SDR-2-CON-TS-ZA-2990 FF, SDR-2-CON-TS-ZA-3030 FF, SDR-2-CON-TS-ZA-3010 FF, SDR-2-CON-TS-ZA-3020 FF, SDR-2-CON-TS-ZA-3040 FF, SDR-2-CON-TS-ZA-3060 FF, SDR-2-CON-TS-ZA-3050 FF, SDR-2-CON-TS-ZA-2510 FF, SDR-2-CON-TS-ZA-2520 FF, SDR-2-CON-TS-ZA-2560 FF, SDR-2-CON-TS-ZA-2550 FF, SDR-2-CON-TS-ZA-2570 FF, SDR-2-CON-TS-ZA-2580 FF, SDR-2-CON-TS-ZA-2590 FF, SDR-2-CON-PW-ZA-1080 FF, SDR-2-CON-PW-ZA-2210 FF, SDR-2-CON-PW-ZA-1040 FF, SDR-2-CON-PW-ZA-1020 FF, SDR-2-CON-PW-ZA-1050 FF, SDR-2-CON-PW-ZA-2300 FF, SDR-2-CON-PW-ZA-2280 FF, SDR-2-CON-PW-ZA-2310 FF, SDR-2-CON-PW-ZA-2290 FF, SDR-2-CON-PW-ZA-2680 FF, SDR-2-CON-PW-ZA-2660 FF, SDR-2-CON-PW-ZA-2690 FF, SDR-2-CON-PW-ZA-2670 FF, SDR-2-CON-PW-ZA-2710 FF, SDR-2-CON-PW-ZA-2780 FF, SDR-2-CON-PW-ZA-2760 FF, SDR-2-CON-PW-ZA-2790 FF, SDR-2-CON-PW-ZA-2770 FF, SDR-2-CON-PW-ZA-2800 FF, SDR-2-CON-PW-ZA-3790 FF, SDR-2-CON-PW-ZA-2240 FF, SDR-2-CON-PW-ZA-1410 FF, SDR-2-CON-PW-ZA-1480 FF, SDR-2-CON-PW-ZA-2250 FF, SDR-2-CON-PW-ZA-3230 FF, SDR-2-CON-PW-ZA-3210 FF, SDR-2-CON-PW-ZA-3240 FF, SDR-2-CON-PW-ZA-3810 FF, SDR-2-CON-PW-ZA-3290 FF, SDR-2-CON-PW-ZA-3270 FF, SDR-2-CON-PW-ZA-3280 FF, SDR-2-CON-PW-ZA-3360 FF, SDR-2-CON-PW-ZA-3390 FF, SDR-2-CON-PW-ZA-3370 FF, SDR-2-CON-PW-ZA-3380 FF, SDR-2-CON-PW-ZA-3400 FF, SDR-2-CON-PW-ZA-3460 FF, SDR-2-CON-PW-ZA-3490 FF, SDR-2-CON-PW-ZA-3470 FF, SDR-2-CON-PW-ZA-3480 FF, SDR-2-CON-PW-ZA-3500 FF, SDR-2-CON-PW-ZA-2810 FF, SDR-2-CON-PW-ZA-2840 FF, SDR-2-CON-PW-ZA-2820 FF, SDR-2-CON-PW-ZA-2830 FF, SDR-2-CON-PW-ZA-2880 FF, SDR-2-CON-PW-ZA-2860 FF, SDR-2-CON-PW-ZA-2890 FF, SDR-2-CON-PW-ZA-2870 FF, SDR-2-CON-PW-ZA-2360 FF, SDR-2-CON-PW-ZA-2440 FF, SDR-2-CON-PW-ZA-2370 FF, SDR-2-CON-PW-ZA-2430 FF, SDR-2-CON-PW-ZA-2450 FF, SDR-2-CON-PW-ZA-2400 FF, SDR-2-CON-PW-ZA-2380 FF, SDR-2-CON-PW-ZA-2410 FF, SDR-2-CON-PW-ZA-2390 FF, SDR-2-CON-PW-ZA-2460 FF, SDR-2-CON-PW-ZA-2540 FF, SDR-2-CON-PW-ZA-2470 FF, SDR-2-CON-PW-ZA-2530 FF, SDR-2-CON-PW-ZA-2500 FF, SDR-2-CON-PW-ZA-2480 FF, SDR-2-CON-PW-ZA-2510 FF, SDR-2-CON-PW-ZA-2490 FF, SDR-2-CON-PW-ZG-1080 FF, SDR-2-CON-PW-ZG-1510 FF, SDR-2-CON-PW-ZA-3680 FF, SDR-2-CON-PW-ZA-3660 FF, SDR-2-CON-PW-ZA-3690 FF, SDR-2-CON-PW-ZA-3670 FF, SDR-2-CON-PW-ZA-3700 FF, SDR-2-CON-PW-ZA-2930 FF, SDR-2-CON-PW-ZA-2950 FF, SDR-2-CON-PW-ZA-2980 FF, SDR-2-CON-PW-ZA-2960 FF, SDR-2-CON-PW-ZA-2990 FF, SDR-2-CON-PW-ZA-2970 FF, SDR-2-CON-PW-ZA-3030 FF, SDR-2-CON-PW-ZA-3050 FF, SDR-2-CON-PW-ZA-3080 FF, SDR-2-CON-PW-ZA-3060 FF, SDR-2-CON-PW-ZA-3090 FF, SDR-2-CON-PW-ZA-3070 FF, SDR-2-CON-PW-ZA-3100 FF, SDR-2-CON-PW-ZA-3130 FF, SDR-2-CON-PW-ZA-3150 FF, SDR-2-CON-PW-ZA-3180 FF, SDR-2-CON-PW-ZA-3160 FF, SDR-2-CON-PW-ZA-3190 FF, SDR-2-CON-PW-ZA-3170 FF, SDR-2-CON-PW-ZA-3200 FF, SDR-2-CON-PW-ZA-2630 FF, SDR-2-CON-PW-ZA-2650 FF, SDR-2-CON-PW-ZA-2600 FF, SDR-2-CON-PW-ZA-2580 FF, SDR-2-CON-PW-ZA-2610 FF, SDR-2-CON-PW-ZA-2590 FF, SDR-2-CON-PW-ZA-2620 FF, SDR-2-CON-SL-ZA-2900 FF, SDR-2-CON-SL-ZA-2890 FF, SDR-2-CON-SL-ZA-1410 FF, SDR-2-CON-SL-ZA-1400 FF, SDR-2-CON-SL-ZA-2980 FF, SDR-2-CON-SL-ZA-2970 FF, SDR-2-CON-SL-ZA-3020 FF, SDR-2-CON-SL-ZA-3010 FF, SDR-2-CON-SL-ZA-3060 FF, SDR-2-CON-SL-ZA-3050 FF, SDR-2-CON-SL-ZA-3100 FF, SDR-2-CON-SL-ZA-3090 FF, SDR-2-CON-SL-ZA-3140 FF, SDR-2-CON-SL-ZA-3130 FF, SDR-2-CON-SL-ZA-3180 FF, SDR-2-CON-SL-ZA-3170 FF, SDR-2-CON-SL-ZA-3220 FF, SDR-2-CON-SL-ZA-3210 FF, SDR-2-CON-SL-ZA-2940 FF, SDR-2-CON-SL-ZA-2930 FF, SDR-2-CON-SL-ZA-2650 FF, SDR-2-CON-SL-ZA-2660 FF, SDR-2-CON-SL-ZA-2800 FF, SDR-2-CON-SL-ZA-2670 FF, SDR-2-CON-SL-ZA-2810 FF, SDR-2-CON-SL-ZA-2820 FF, SDR-2-CON-SL-ZA-2830 FF, SDR-2-CON-SL-ZA-2840 FF, SDR-2-CON-SL-ZA-2850 FF, SDR-2-CON-SL-ZA-2860 FF, SDR-2-CON-MV-ZA-1100 FF, SDR-2-CON-MV-ZA-1190 FF, SDR-2-CON-MV-ZA-1180 FF, SDR-2-CON-MV-ZA-1230 FF, SDR-2-CON-MV-ZA-1220 FF, SDR-2-CON-MV-ZA-1270 FF, SDR-2-CON-MV-ZA-1260 FF, SDR-2-CON-TE-ZA-1040 FF, SDR-2-CON-TE-ZA-1050 FF, SDR-2-CON-TE-ZA-1060 FF, SDR-2-CON-TE-ZA-3280 FF, SDR-2-CON-TE-ZA-3260 FF, SDR-2-CON-TE-ZA-3270 FF, SDR-2-CON-TE-ZA-3310 FF, SDR-2-CON-TE-ZA-3320 FF, SDR-2-CON-TE-ZA-3370 FF, SDR-2-CON-TE-ZA-3380 FF, SDR-2-CON-TE-ZA-3340 FF, SDR-2-CON-TE-ZA-3350 FF, SDR-2-CON-TE-ZA-3360 FF, SDR-2-CON-TE-ZA-3400 FF, SDR-2-CON-TE-ZA-3410 FF, SDR-2-CON-TE-ZA-3460 FF, SDR-2-CON-TE-ZA-3470 FF, SDR-2-CON-TE-ZA-3430 FF, SDR-2-CON-TE-ZA-3440 FF, SDR-2-CON-TE-ZA-3450 FF, SDR-2-CON-TE-ZA-3500 FF, SDR-2-CON-TE-ZA-3550 FF, SDR-2-CON-TE-ZA-3520 FF, SDR-2-CON-TE-ZA-3530 FF, SDR-2-CON-TE-ZA-3540 FF, SDR-2-CON-TE-ZA-3590 FF, SDR-2-CON-TE-ZA-3640 FF, SDR-2-CON-TE-ZA-3610 FF, SDR-2-CON-TE-ZA-3620 FF, SDR-2-CON-TE-ZA-3630 FF, SDR-2-CON-TE-ZA-3680 FF, SDR-2-CON-TE-ZA-3730 FF, SDR-2-CON-TE-ZA-3690 FF, SDR-2-CON-TE-ZA-3740 FF, SDR-2-CON-TE-ZA-3700 FF, SDR-2-CON-TE-ZA-3710 FF, SDR-2-CON-TE-ZA-3720 FF, SDR-2-CON-TE-ZA-3770 FF, SDR-2-CON-TE-ZA-3820 FF, SDR-2-CON-TE-ZA-3780 FF, SDR-2-CON-TE-ZA-3830 FF, SDR-2-CON-TE-ZA-3790 FF, SDR-2-CON-TE-ZA-3800 FF, SDR-2-CON-TE-ZA-3810 FF, SDR-2-CON-TE-ZA-3860 FF, SDR-2-CON-TE-ZA-3910 FF, SDR-2-CON-TE-ZA-3870 FF, SDR-2-CON-TE-ZA-3920 FF, SDR-2-CON-TE-ZA-3880 FF, SDR-2-CON-TE-ZA-3890 FF, SDR-2-CON-TE-ZA-3900 FF, SDR-2-CON-TE-ZA-3940 FF, SDR-2-CON-TE-ZA-3950 FF, SDR-2-CON-TE-ZA-4000 FF, SDR-2-CON-TE-ZA-3960 FF, SDR-2-CON-TE-ZA-4010 FF, SDR-2-CON-TE-ZA-3970 FF, SDR-2-CON-TE-ZA-3980 FF, SDR-2-CON-TE-ZA-3990 FF, SDR-2-CON-TE-ZA-4030 FF, SDR-2-CON-TE-ZA-4040 FF, SDR-2-CON-TE-ZA-4090 FF, SDR-2-CON-TE-ZA-4050 FF, SDR-2-CON-TE-ZA-4100 FF, SDR-2-CON-TE-ZA-4060 FF, SDR-2-CON-TE-ZA-4070 FF, SDR-2-CON-TE-ZA-4080 FF, SDR-2-CON-TE-ZA-4130 FF, SDR-2-CON-TE-ZA-4180 FF, SDR-2-CON-TE-ZA-4160 FF, SDR-2-CON-TE-ZA-4170 FF, SDR-2-CON-SL-ZA-3260 FF, SDR-2-CON-SL-ZA-3250 FF, SDR-2-CON-SL-ZA-3300 FF, SDR-2-CON-SL-ZA-3290 FF, SDR-2-CON-SL-ZA-3340 FF, SDR-2-CON-SL-ZA-3330 FF, SDR-2-CON-SL-ZA-3380 FF, SDR-2-CON-SL-ZA-3370 FF, SDR-2-CON-SL-ZA-3430 FF, SDR-2-CON-SL-ZA-3440 FF, SDR-2-CON-SL-ZA-3450 FF, SDR-2-CON-SL-ZA-3460 FF, SDR-2-CON-SL-ZA-3470 FF, SDR-2-CON-SL-ZA-3480 FF, SDR-2-CON-SL-ZA-3490 FF, SDR-2-CON-SL-ZA-3500 FF, SDR-2-CON-SL-ZA-3510 FF, SDR-2-CON-SL-ZA-3520 FF, SDR-2-CON-SL-ZA-3530 FF, SDR-2-CON-SL-ZA-3540 FF, SDR-2-CON-SL-ZA-3550 FF, SDR-2-CON-MV-ZA-1300 FF, SDR-2-CON-MV-ZA-1340 FF, SDR-2-CON-TE-ZA-4220 FF, SDR-2-CON-TE-ZA-4270 FF, SDR-2-CON-TE-ZA-4260 FF, SDR-2-CON-TE-ZA-4340 FF, SDR-2-CON-TE-ZA-4350 FF, SDR-2-CON-TE-ZA-4430 FF, SDR-2-CON-TE-ZA-4440 FF, SDR-2-CON-TE-ZA-4520 FF, SDR-2-CON-TE-ZA-4530 FF, SDR-2-CON-CC-ZA-1050 FF, SDR-2-CON-CC-ZA-1060 FF, SDR-2-CON-CC-ZA-1260 FF, SDR-2-CON-CC-ZA-1270 FF, SDR-2-CON-CC-ZA-1500 FF, SDR-2-CON-CC-ZA-1510 FF, SDR-2-CON-CC-ZA-1520 FF, SDR-2-CON-CC-ZA-1530 FF, SDR-2-CON-CC-ZA-1540 FF, SDR-2-CON-CC-ZA-1550 FF, SDR-2-CON-CC-ZA-1560 FF, SDR-2-CON-CC-ZA-1570 FF, SDR-2-CON-CC-ZA-1580 FF, SDR-2-CON-CC-ZA-1590 FF, SDR-2-CON-CC-ZA-1610 FF, SDR-2-CON-CC-ZA-1620 FF, SDR-2-CON-CC-ZA-1630 FF, SDR-2-CON-CC-ZA-1640 FF, SDR-2-CON-CC-ZA-1650 FF, SDR-2-CON-CC-ZA-1660 FF, SDR-2-CON-CC-ZA-1720 FF, SDR-2-CON-CC-ZA-1730 FF, SDR-2-CON-CC-ZA-1760 FF, SDR-2-CON-CC-ZA-1770 FF, SDR-2-CON-CC-ZA-1780 FF, SDR-2-CON-CC-ZA-1800 FF, SDR-2-CON-CC-ZA-1810 FF, SDR-2-CON-CC-ZA-1820 FF, SDR-2-CON-CC-ZA-1840 FF, SDR-2-CON-CC-ZA-1850 FF, SDR-2-CON-CC-ZA-1860 FF, SDR-2-CON-CC-ZG-1500 FF, SDR-2-CON-CC-ZG-1540 FF, SDR-2-CON-CC-ZG-1550 FF, SDR-2-CON-CC-ZG-1510 FF, SDR-2-CON-CC-ZG-1560 FF, SDR-2-CON-CC-ZG-1570 FF, SDR-2-CON-CC-ZG-1580 FF, SDR-2-CON-CC-ZG-1520 FF, SDR-2-CON-CC-ZG-1590 FF, SDR-2-CON-CC-ZG-1530 FF, SDR-2-CON-CC-ZG-1600 FF, SDR-2-CON-CC-ZG-1610 FF, SDR-2-CON-CC-ZG-1620 FF, SDR-2-CON-CC-ZG-1630 FF, SDR-2-CON-CC-ZG-1640 FF, SDR-2-CON-CC-ZG-1650 FF, SDR-2-CON-SE-ZA-2690 FF, SDR-2-MILS-1050 FF, SDR-2-CON-ST-ZA-5970 FF, SDR-2-CON-SE-ZA-1000, SDR-2-CON-SE-ZA-1420, SDR-2-CON-SE-ZA-1030, SDR-2-CON-SE-ZA-1450, SDR-2-CON-SE-ZA-1460, SDR-2-CON-SE-ZA-1520 → SDR-2-CON-SE-ZA-1490, SDR-2-CON-SE-ZA-1550, SDR-2-CON-SE-ZA-1560, SDR-2-CON-SE-ZA-1620, SDR-2-CON-SE-ZA-1590, SDR-2-CON-SE-ZA-1650, SDR-2-CON-SE-ZA-1660, SDR-2-CON-SE-ZA-1720, SDR-2-CON-SE-ZA-1690, SDR-2-CON-SE-ZA-1750, SDR-2-CON-SE-ZA-1760, SDR-2-CON-SE-ZA-1820, SDR-2-CON-SE-ZA-1790, SDR-2-CON-SE-ZA-1850, SDR-2-CON-SE-ZA-1860, SDR-2-CON-SE-ZA-1920, SDR-2-CON-SE-ZA-1890, SDR-2-CON-SE-ZA-1950, SDR-2-CON-SE-ZA-1960, SDR-2-CON-SE-ZA-2020, SDR-2-CON-SE-ZA-1990, SDR-2-CON-SE-ZA-2050, SDR-2-CON-SE-ZA-2060, SDR-2-CON-SE-ZA-2120, SDR-2-CON-SE-ZA-2070, SDR-2-CON-SE-ZA-2080, SDR-2-CON-SE-ZA-2130, SDR-2-CON-SE-ZA-2090, SDR-2-CON-SE-ZA-2150, SDR-2-CON-SE-ZA-2100, SDR-2-CON-SE-ZA-2140, SDR-2-CON-SE-ZA-2160, SDR-2-CON-SE-ZA-2220, SDR-2-CON-SE-ZA-2170, SDR-2-CON-SE-ZA-2230, SDR-2-CON-SE-ZA-2190, SDR-2-CON-SE-ZA-2250, SDR-2-CON-SE-ZA-2200, SDR-2-CON-SE-ZA-2240, SDR-2-CON-SE-ZA-2260, SDR-2-CON-SE-ZA-2320, SDR-2-CON-SE-ZA-2270, SDR-2-CON-SE-ZA-2280, SDR-2-CON-SE-ZA-2330, SDR-2-CON-SE-ZA-2290, SDR-2-CON-SE-ZA-2350, SDR-2-CON-SE-ZA-2300, SDR-2-CON-SE-ZA-2340, SDR-2-CON-SE-ZA-2360, SDR-2-CON-SE-ZA-2420, SDR-2-CON-SE-ZA-2370, SDR-2-CON-SE-ZA-2380, SDR-2-CON-SE-ZA-2430, SDR-2-CON-SE-ZA-2390, SDR-2-CON-SE-ZA-2450, SDR-2-CON-SE-ZA-2400, SDR-2-CON-SE-ZA-2440, SDR-2-CON-PW-ZG-1000, SDR-2-CON-PW-ZA-2910, SDR-2-CON-PW-ZA-3010, SDR-2-CON-PW-ZA-3020, SDR-2-CON-PW-ZA-3110, SDR-2-CON-PW-ZA-3120, SDR-2-CON-PW-ZA-2560, SDR-2-CON-TE-ZA-4290, SDR-2-CON-RW-ZA-1720, SDR-2-CON-RW-ZA-1720 FF, SDR-2-CON-ST-ZA-6120, SDR-2-CON-SE-ZA-1010 FF, SDR-2-CON-SE-ZA-1020 FF, SDR-2-CON-SE-ZA-1040 FF, SDR-2-CON-SE-ZA-1050 FF, SDR-2-CON-SE-ZA-1470 FF, SDR-2-CON-SE-ZA-1480 FF, SDR-2-CON-SE-ZA-1500 FF, SDR-2-CON-SE-ZA-1510 FF, SDR-2-CON-SE-ZA-1570 FF, SDR-2-CON-SE-ZA-1580 FF, SDR-2-CON-SE-ZA-1600 FF, SDR-2-CON-SE-ZA-1610 FF, SDR-2-CON-SE-ZA-1670 FF, SDR-2-CON-SE-ZA-1680 FF, SDR-2-CON-SE-ZA-1700 FF, SDR-2-CON-SE-ZA-1710 FF, SDR-2-CON-SE-ZA-1770 FF, SDR-2-CON-SE-ZA-1780 FF, SDR-2-CON-SE-ZA-1800 FF, SDR-2-CON-SE-ZA-1810 FF, SDR-2-CON-SE-ZA-1870 FF, SDR-2-CON-SE-ZA-1880 FF, SDR-2-CON-SE-ZA-1900 FF, SDR-2-CON-SE-ZA-1910 FF, SDR-2-CON-SE-ZA-1970 FF, SDR-2-CON-SE-ZA-2000 FF, SDR-2-CON-SE-ZA-2110 FF, SDR-2-CON-SE-ZA-2180 FF, SDR-2-CON-SE-ZA-2210 FF, SDR-2-CON-SE-ZA-2310 FF, SDR-2-CON-SE-ZA-2410 FF, SDR-2-CON-TS-ZA-3100 FF, SDR-2-CON-TS-ZA-3130 FF, SDR-2-CON-TS-ZA-3110 FF, SDR-2-CON-TS-ZA-3120 FF, SDR-2-CON-TS-ZA-3140 FF, SDR-2-CON-TS-ZA-2300 FF, SDR-2-CON-TS-ZA-2380 FF, SDR-2-CON-TS-ZA-2310 FF, SDR-2-CON-TS-ZA-2400 FF, SDR-2-CON-TS-ZA-2900 FF, SDR-2-CON-TS-ZA-3000 FF, SDR-2-CON-TS-ZA-2500 FF, SDR-2-CON-PW-ZA-1000 FF, SDR-2-CON-PW-ZA-2200 FF, SDR-2-CON-PW-ZA-1010 FF, SDR-2-CON-PW-ZA-2260 FF, SDR-2-CON-PW-ZA-2340 FF, SDR-2-CON-PW-ZA-2270 FF, SDR-2-CON-PW-ZA-2330 FF, SDR-2-CON-PW-ZA-2350 FF, SDR-2-CON-PW-ZG-1500 FF, SDR-2-CON-PW-ZG-1010 FF, SDR-2-CON-PW-ZA-2940 FF, SDR-2-CON-PW-ZA-2920 FF, SDR-2-CON-PW-ZA-3040 FF, SDR-2-CON-PW-ZA-3140 FF, SDR-2-CON-PW-ZA-2640 FF, SDR-2-CON-PW-ZA-2570 FF, SDR-2-CON-SL-ZA-2870 FF, SDR-2-CON-SL-ZA-2880 FF, SDR-2-CON-SL-ZA-1300 FF, SDR-2-CON-SL-ZA-1310 FF, SDR-2-CON-SL-ZA-2950 FF, SDR-2-CON-SL-ZA-2960 FF, SDR-2-CON-SL-ZA-2990 FF, SDR-2-CON-SL-ZA-3000 FF, SDR-2-CON-SL-ZA-3030 FF, SDR-2-CON-SL-ZA-3040 FF, SDR-2-CON-SL-ZA-3070 FF, SDR-2-CON-SL-ZA-3080 FF, SDR-2-CON-SL-ZA-3110 FF, SDR-2-CON-SL-ZA-3120 FF, SDR-2-CON-SL-ZA-3150 FF, SDR-2-CON-SL-ZA-3160 FF, SDR-2-CON-SL-ZA-3190 FF, SDR-2-CON-SL-ZA-3200 FF, SDR-2-CON-SL-ZA-2910 FF, SDR-2-CON-SL-ZA-2920 FF, SDR-2-CON-MV-ZA-1000 FF, SDR-2-CON-MV-ZA-1070 FF, SDR-2-CON-MV-ZA-1150 FF, SDR-2-CON-MV-ZA-1160 FF, SDR-2-CON-MV-ZA-1170 FF, SDR-2-CON-MV-ZA-1200 FF, SDR-2-CON-MV-ZA-1210 FF, SDR-2-CON-MV-ZA-1240 FF, SDR-2-CON-MV-ZA-1250 FF, SDR-2-CON-TE-ZA-1030 FF, SDR-2-CON-TE-ZA-3220 FF, SDR-2-CON-TE-ZA-3230 FF, SDR-2-CON-TE-ZA-3240 FF, SDR-2-CON-TE-ZA-3290 FF, SDR-2-CON-TE-ZA-3250 FF, SDR-2-CON-TE-ZA-3330 FF, SDR-2-CON-TE-ZA-3490 FF, SDR-2-CON-TE-ZA-3510 FF, SDR-2-CON-TE-ZA-3560 FF, SDR-2-CON-TE-ZA-3570 FF, SDR-2-CON-TE-ZA-3580 FF, SDR-2-CON-TE-ZA-3600 FF, SDR-2-CON-TE-ZA-3650 FF, SDR-2-CON-TE-ZA-3660 FF, SDR-2-CON-TE-ZA-3670 FF, SDR-2-CON-TE-ZA-3750 FF, SDR-2-CON-TE-ZA-3760 FF, SDR-2-CON-TE-ZA-3840 FF, SDR-2-CON-TE-ZA-3850 FF, SDR-2-CON-TE-ZA-3930 FF, SDR-2-CON-TE-ZA-4020 FF, SDR-2-CON-TE-ZA-4110 FF, SDR-2-CON-TE-ZA-4120 FF, SDR-2-CON-TE-ZA-4140 FF, SDR-2-CON-TE-ZA-4190 FF, SDR-2-CON-TE-ZA-4150 FF, SDR-2-CON-SL-ZA-3230 FF, SDR-2-CON-SL-ZA-3240 FF, SDR-2-CON-SL-ZA-3270 FF, SDR-2-CON-SL-ZA-3280 FF, SDR-2-CON-SL-ZA-3310 FF, SDR-2-CON-SL-ZA-3320 FF, SDR-2-CON-SL-ZA-3350 FF, SDR-2-CON-SL-ZA-3360 FF, SDR-2-CON-SL-ZA-3390 FF, SDR-2-CON-SL-ZA-3400 FF, SDR-2-CON-SL-ZA-3420 FF, SDR-2-CON-SL-ZA-3410 FF, SDR-2-CON-MV-ZA-1280 FF, SDR-2-CON-MV-ZA-1290 FF, SDR-2-CON-MV-ZA-1310 FF, SDR-2-CON-MV-ZA-1320 FF, SDR-2-CON-MV-ZA-1330 FF, SDR-2-CON-MV-ZA-1350 FF, SDR-2-CON-TE-ZA-4200 FF, SDR-2-CON-TE-ZA-4210 FF, SDR-2-CON-TE-ZA-4230 FF, SDR-2-CON-TE-ZA-4280 FF, SDR-2-CON-TE-ZA-4240 FF, SDR-2-CON-TE-ZA-4250 FF, SDR-2-CON-TE-ZA-4300 FF, SDR-2-CON-TE-ZA-4310 FF, SDR-2-CON-TE-ZA-4360 FF, SDR-2-CON-TE-ZA-4320 FF, SDR-2-CON-TE-ZA-4370 FF, SDR-2-CON-TE-ZA-4330 FF, SDR-2-CON-TE-ZA-4380 FF, SDR-2-CON-TE-ZA-4390 FF, SDR-2-CON-TE-ZA-4400 FF, SDR-2-CON-TE-ZA-4450 FF, SDR-2-CON-TE-ZA-4410 FF, SDR-2-CON-TE-ZA-4460 FF, SDR-2-CON-TE-ZA-4420 FF, SDR-2-CON-TE-ZA-4470 FF, SDR-2-CON-TE-ZA-4480 FF, SDR-2-CON-TE-ZA-4490 FF, SDR-2-CON-TE-ZA-4540 FF, SDR-2-CON-TE-ZA-4500 FF, SDR-2-CON-TE-ZA-4550 FF, SDR-2-CON-TE-ZA-4510 FF, SDR-2-CON-CC-ZA-1000 FF, SDR-2-CON-CC-ZA-1090 FF, SDR-2-CON-CC-ZA-1250 FF, SDR-2-CON-CC-ZA-1390 FF, SDR-2-CON-CC-ZA-1670 FF, SDR-2-CON-CC-ZA-1700 FF, SDR-2-CON-CC-ZA-1750 FF, SDR-2-CON-CC-ZA-1790 FF, SDR-2-CON-CC-ZA-1830 FF, SDR-2-CON-ST-ZA-4020 FF, SDR-2-CON-SE-ZA-1430 FF, SDR-2-CON-SE-ZA-1440 FF, SDR-2-CON-SE-ZA-1530 FF, SDR-2-CON-SE-ZA-1540 FF, SDR-2-CON-SE-ZA-1630 FF, SDR-2-CON-SE-ZA-1730 FF, SDR-2-CON-SE-ZA-1740 FF, SDR-2-CON-SE-ZA-1830 FF, SDR-2-CON-SE-ZA-1840 FF, SDR-2-CON-SE-ZA-1930 FF, SDR-2-CON-SE-ZA-1940 FF, SDR-2-CON-SE-ZA-1980 FF, SDR-2-CON-SE-ZA-2030 FF, SDR-2-CON-SE-ZA-2010 FF, SDR-2-CON-SE-ZA-2040 FF, SDR-2-CON-TS-ZA-1900 FF, SDR-2-CON-TS-ZA-1010 FF, SDR-2-CON-TS-ZA-1080 FF, SDR-2-CON-TS-ZA-1910 FF, SDR-2-CON-TS-ZA-1040 FF, SDR-2-CON-TS-ZA-1020 FF, SDR-2-CON-TS-ZA-1050 FF, SDR-2-CON-TS-ZA-1060 FF, SDR-2-CON-TS-ZA-1070 FF, SDR-2-CON-TS-ZA-2200 FF, SDR-2-CON-TS-ZA-2280 FF, SDR-2-CON-TS-ZA-2210 FF, SDR-2-CON-TS-ZA-2270 FF, SDR-2-CON-TS-ZA-2290 FF, SDR-2-CON-TS-ZA-2230 FF, SDR-2-CON-TS-ZA-2240 FF, SDR-2-CON-TS-ZA-2250 FF, SDR-2-CON-TS-ZA-2260 FF, SDR-2-CON-TS-ZA-1180 FF, SDR-2-CON-TS-ZA-1920 FF, SDR-2-CON-TS-ZA-1190 FF, SDR-2-CON-TS-ZA-1260 FF, SDR-2-CON-TS-ZA-1930 FF, SDR-2-CON-TS-ZA-2010 FF, SDR-2-CON-TS-ZA-2000 FF, SDR-2-CON-TS-ZA-2020 FF, SDR-2-CON-TS-ZA-2030 FF, SDR-2-CON-TS-ZA-2040 FF, SDR-2-CON-TS-ZA-1270 FF, SDR-2-CON-TS-ZA-1940 FF, SDR-2-CON-TS-ZA-1280 FF, SDR-2-CON-TS-ZA-1350 FF, SDR-2-CON-TS-ZA-1950 FF, SDR-2-CON-TS-ZA-2060 FF, SDR-2-CON-TS-ZA-2050 FF, SDR-2-CON-TS-ZA-2660 FF, SDR-2-CON-TS-ZA-2650 FF, SDR-2-CON-TS-ZA-2670 FF, SDR-2-CON-TS-ZA-2680 FF, SDR-2-CON-TS-ZA-2690 FF, SDR-2-CON-TS-ZA-2700 FF, SDR-2-CON-TS-ZA-2730 FF, SDR-2-CON-TS-ZA-2710 FF, SDR-2-CON-TS-ZA-2720 FF, SDR-2-CON-TS-ZA-2740 FF, SDR-2-CON-TS-ZA-2760 FF, SDR-2-CON-TS-ZA-2750 FF, SDR-2-CON-TS-ZA-2770 FF, SDR-2-CON-TS-ZA-2780 FF, SDR-2-CON-TS-ZA-2800 FF, SDR-2-CON-TS-ZA-2830 FF, SDR-2-CON-TS-ZA-2810 FF, SDR-2-CON-TS-ZA-2820 FF, SDR-2-CON-TS-ZA-2840 FF, SDR-2-CON-TS-ZA-2860 FF, SDR-2-CON-TS-ZA-2850 FF, SDR-2-CON-TS-ZA-2870 FF, SDR-2-CON-TS-ZA-2880 FF, SDR-2-CON-TS-ZA-2890 FF, SDR-2-CON-TS-ZA-1630 FF, SDR-2-CON-TS-ZA-1960 FF, SDR-2-CON-TS-ZA-1640 FF, SDR-2-CON-TS-ZA-1710 FF, SDR-2-CON-TS-ZA-1970 FF, SDR-2-CON-TS-ZA-2110 FF, SDR-2-CON-TS-ZA-2100 FF, SDR-2-CON-TS-ZA-2120 FF, SDR-2-CON-TS-ZA-2130 FF, SDR-2-CON-TS-ZA-2140 FF, SDR-2-CON-TS-ZA-1720 FF, SDR-2-CON-TS-ZA-1980 FF, SDR-2-CON-TS-ZA-1730 FF, SDR-2-CON-TS-ZA-1800 FF, SDR-2-CON-TS-ZA-1990 FF, SDR-2-CON-TS-ZA-2160 FF, SDR-2-CON-TS-ZA-2150 FF, SDR-2-CON-TS-ZA-2170 FF, SDR-2-CON-TS-ZA-2180 FF, SDR-2-CON-TS-ZA-2190 FF, SDR-2-CON-TS-ZA-3160 FF, SDR-2-CON-TS-ZA-3150 FF, SDR-2-CON-TS-ZA-3170 FF, SDR-2-CON-TS-ZA-3180 FF, SDR-2-CON-TS-ZA-3190 FF, SDR-2-CON-TS-ZA-2370 FF, SDR-2-CON-TS-ZA-2390 FF, SDR-2-CON-TS-ZA-2330 FF, SDR-2-CON-TS-ZA-2320 FF, SDR-2-CON-TS-ZA-2340 FF, SDR-2-CON-TS-ZA-2350 FF, SDR-2-CON-TS-ZA-2360 FF, SDR-2-CON-TS-ZA-2430 FF, SDR-2-CON-TS-ZA-2410 FF, SDR-2-CON-TS-ZA-2420 FF, SDR-2-CON-TS-ZA-2440 FF, SDR-2-CON-TS-ZA-2460 FF, SDR-2-CON-TS-ZA-2450 FF, SDR-2-CON-TS-ZA-2930 FF, SDR-2-CON-TS-ZA-2910 FF, SDR-2-CON-TS-ZA-2920 FF, SDR-2-CON-TS-ZA-2940 FF, SDR-2-CON-TS-ZA-2960 FF, SDR-2-CON-TS-ZA-3030 FF, SDR-2-CON-TS-ZA-3010 FF, SDR-2-CON-TS-ZA-3020 FF, SDR-2-CON-TS-ZA-3040 FF, SDR-2-CON-TS-ZA-3060 FF, SDR-2-CON-TS-ZA-3050 FF, SDR-2-CON-TS-ZA-2510 FF, SDR-2-CON-TS-ZA-2520 FF, SDR-2-CON-TS-ZA-2560 FF, SDR-2-CON-TS-ZA-2550 FF, SDR-2-CON-TS-ZA-2570 FF, SDR-2-CON-TS-ZA-2580 FF, SDR-2-CON-TS-ZA-2590 FF, SDR-2-CON-PW-ZA-1080 FF, SDR-2-CON-PW-ZA-2210 FF, SDR-2-CON-PW-ZA-1040 FF, SDR-2-CON-PW-ZA-1020 FF, SDR-2-CON-PW-ZA-1050 FF, SDR-2-CON-PW-ZA-2300 FF, SDR-2-CON-PW-ZA-2280 FF, SDR-2-CON-PW-ZA-2310 FF, SDR-2-CON-PW-ZA-2290 FF, SDR-2-CON-PW-ZA-2680 FF, SDR-2-CON-PW-ZA-2660 FF, SDR-2-CON-PW-ZA-2690 FF, SDR-2-CON-PW-ZA-2670 FF, SDR-2-CON-PW-ZA-2710 FF, SDR-2-CON-PW-ZA-3260 FF, SDR-2-CON-PW-ZA-3290 FF, SDR-2-CON-PW-ZA-3270 FF, SDR-2-CON-PW-ZA-3280 FF, SDR-2-CON-PW-ZA-3360 FF, SDR-2-CON-PW-ZA-3390 FF, SDR-2-CON-PW-ZA-3370 FF, SDR-2-CON-PW-ZA-3380 FF, SDR-2-CON-PW-ZA-3400 FF, SDR-2-CON-PW-ZA-3460 FF, SDR-2-CON-PW-ZA-3490 FF, SDR-2-CON-PW-ZA-3470 FF, SDR-2-CON-PW-ZA-3480 FF, SDR-2-CON-PW-ZA-3500 FF, SDR-2-CON-PW-ZA-2810 FF, SDR-2-CON-PW-ZA-2840 FF, SDR-2-CON-PW-ZA-2820 FF, SDR-2-CON-PW-ZA-2830 FF, SDR-2-CON-PW-ZA-2880 FF, SDR-2-CON-PW-ZA-2860 FF, SDR-2-CON-PW-ZA-2890 FF, SDR-2-CON-PW-ZA-2870 FF, SDR-2-CON-PW-ZA-2360 FF, SDR-2-CON-PW-ZA-2440 FF, SDR-2-CON-PW-ZA-2370 FF, SDR-2-CON-PW-ZA-2430 FF, SDR-2-CON-PW-ZA-2450 FF, SDR-2-CON-PW-ZA-2460 FF, SDR-2-CON-PW-ZA-2540 FF, SDR-2-CON-PW-ZA-2470 FF, SDR-2-CON-PW-ZA-2530 FF, SDR-2-CON-PW-ZG-1080 FF, SDR-2-CON-PW-ZG-1510 FF, SDR-2-CON-PW-ZA-3680 FF, SDR-2-CON-PW-ZA-3660 FF, SDR-2-CON-PW-ZA-3690 FF, SDR-2-CON-PW-ZA-3670 FF, SDR-2-CON-PW-ZA-3700 FF, SDR-2-CON-PW-ZA-2930 FF, SDR-2-CON-PW-ZA-2950 FF, SDR-2-CON-PW-ZA-2980 FF, SDR-2-CON-PW-ZA-2960 FF, SDR-2-CON-PW-ZA-2990 FF, SDR-2-CON-PW-ZA-2970 FF, SDR-2-CON-PW-ZA-3030 FF, SDR-2-CON-PW-ZA-3050 FF, SDR-2-CON-PW-ZA-3080 FF, SDR-2-CON-PW-ZA-3060 FF, SDR-2-CON-PW-ZA-3090 FF, SDR-2-CON-PW-ZA-3070 FF, SDR-2-CON-PW-ZA-3100 FF, SDR-2-CON-PW-ZA-3130 FF, SDR-2-CON-PW-ZA-3150 FF, SDR-2-CON-PW-ZA-3180 FF, SDR-2-CON-PW-ZA-3160 FF, SDR-2-CON-PW-ZA-3190 FF, SDR-2-CON-PW-ZA-3170 FF, SDR-2-CON-PW-ZA-3200 FF, SDR-2-CON-PW-ZA-2630 FF, SDR-2-CON-PW-ZA-2650 FF, SDR-2-CON-PW-ZA-2600 FF, SDR-2-CON-PW-ZA-2580 FF, SDR-2-CON-PW-ZA-2610 FF, SDR-2-CON-PW-ZA-2590 FF, SDR-2-CON-PW-ZA-2620 FF, SDR-2-CON-SL-ZA-2900 FF, SDR-2-CON-SL-ZA-2890 FF, SDR-2-CON-SL-ZA-1410 FF, SDR-2-CON-SL-ZA-1400 FF, SDR-2-CON-SL-ZA-2980 FF, SDR-2-CON-SL-ZA-2970 FF, SDR-2-CON-SL-ZA-3020 FF, SDR-2-CON-SL-ZA-3010 FF, SDR-2-CON-SL-ZA-3060 FF, SDR-2-CON-SL-ZA-3050 FF, SDR-2-CON-SL-ZA-3100 FF, SDR-2-CON-SL-ZA-3090 FF, SDR-2-CON-SL-ZA-3140 FF, SDR-2-CON-SL-ZA-3130 FF, SDR-2-CON-SL-ZA-3180 FF, SDR-2-CON-SL-ZA-3170 FF, SDR-2-CON-SL-ZA-3220 FF, SDR-2-CON-SL-ZA-3210 FF, SDR-2-CON-SL-ZA-2940 FF, SDR-2-CON-SL-ZA-2930 FF, SDR-2-CON-SL-ZA-2650 FF, SDR-2-CON-SL-ZA-2660 FF, SDR-2-CON-SL-ZA-2800 FF, SDR-2-CON-SL-ZA-2670 FF, SDR-2-CON-SL-ZA-2810 FF, SDR-2-CON-SL-ZA-2820 FF, SDR-2-CON-SL-ZA-2830 FF, SDR-2-CON-SL-ZA-2840 FF, SDR-2-CON-SL-ZA-2850 FF, SDR-2-CON-SL-ZA-2860 FF, SDR-2-CON-MV-ZA-1100 FF, SDR-2-CON-MV-ZA-1190 FF, SDR-2-CON-MV-ZA-1180 FF, SDR-2-CON-MV-ZA-1230 FF, SDR-2-CON-MV-ZA-1220 FF, SDR-2-CON-MV-ZA-1270 FF, SDR-2-CON-MV-ZA-1260 FF, SDR-2-CON-TE-ZA-3280 FF, SDR-2-CON-TE-ZA-3260 FF, SDR-2-CON-TE-ZA-3270 FF, SDR-2-CON-TE-ZA-3310 FF, SDR-2-CON-TE-ZA-3320 FF, SDR-2-CON-TE-ZA-3370 FF, SDR-2-CON-TE-ZA-3380 FF, SDR-2-CON-TE-ZA-3340 FF, SDR-2-CON-TE-ZA-3350 FF, SDR-2-CON-TE-ZA-3360 FF, SDR-2-CON-TE-ZA-3500 FF, SDR-2-CON-TE-ZA-3550 FF, SDR-2-CON-TE-ZA-3520 FF, SDR-2-CON-TE-ZA-3530 FF, SDR-2-CON-TE-ZA-3540 FF, SDR-2-CON-TE-ZA-3590 FF, SDR-2-CON-TE-ZA-3640 FF, SDR-2-CON-TE-ZA-3610 FF, SDR-2-CON-TE-ZA-3620 FF, SDR-2-CON-TE-ZA-3630 FF, SDR-2-CON-TE-ZA-3680 FF, SDR-2-CON-TE-ZA-3730 FF, SDR-2-CON-TE-ZA-3690 FF, SDR-2-CON-TE-ZA-3740 FF, SDR-2-CON-TE-ZA-3700 FF, SDR-2-CON-TE-ZA-3710 FF, SDR-2-CON-TE-ZA-3720 FF, SDR-2-CON-TE-ZA-3770 FF, SDR-2-CON-TE-ZA-3820 FF, SDR-2-CON-TE-ZA-3780 FF, SDR-2-CON-TE-ZA-3830 FF, SDR-2-CON-TE-ZA-3790 FF, SDR-2-CON-TE-ZA-3800 FF, SDR-2-CON-TE-ZA-3810 FF, SDR-2-CON-TE-ZA-3860 FF, SDR-2-CON-TE-ZA-3910 FF, SDR-2-CON-TE-ZA-3870 FF, SDR-2-CON-TE-ZA-3920 FF, SDR-2-CON-TE-ZA-3880 FF, SDR-2-CON-TE-ZA-3890 FF, SDR-2-CON-TE-ZA-3900 FF, SDR-2-CON-TE-ZA-3940 FF, SDR-2-CON-TE-ZA-3950 FF, SDR-2-CON-TE-ZA-4000 FF, SDR-2-CON-TE-ZA-3960 FF, SDR-2-CON-TE-ZA-4010 FF, SDR-2-CON-TE-ZA-3970 FF, SDR-2-CON-TE-ZA-3980 FF, SDR-2-CON-TE-ZA-3990 FF, SDR-2-CON-TE-ZA-4030 FF, SDR-2-CON-TE-ZA-4040 FF, SDR-2-CON-TE-ZA-4090 FF, SDR-2-CON-TE-ZA-4050 FF, SDR-2-CON-TE-ZA-4100 FF, SDR-2-CON-TE-ZA-4060 FF, SDR-2-CON-TE-ZA-4070 FF, SDR-2-CON-TE-ZA-4080 FF, SDR-2-CON-TE-ZA-4130 FF, SDR-2-CON-TE-ZA-4180 FF, SDR-2-CON-TE-ZA-4160 FF, SDR-2-CON-TE-ZA-4170 FF, SDR-2-CON-SL-ZA-3260 FF, SDR-2-CON-SL-ZA-3250 FF, SDR-2-CON-SL-ZA-3300 FF, SDR-2-CON-SL-ZA-3290 FF, SDR-2-CON-SL-ZA-3340 FF, SDR-2-CON-SL-ZA-3330 FF, SDR-2-CON-SL-ZA-3380 FF, SDR-2-CON-SL-ZA-3370 FF, SDR-2-CON-SL-ZA-3430 FF, SDR-2-CON-SL-ZA-3440 FF, SDR-2-CON-SL-ZA-3450 FF, SDR-2-CON-SL-ZA-3460 FF, SDR-2-CON-SL-ZA-3470 FF, SDR-2-CON-SL-ZA-3480 FF, SDR-2-CON-SL-ZA-3490 FF, SDR-2-CON-SL-ZA-3500 FF, SDR-2-CON-SL-ZA-3510 FF, SDR-2-CON-SL-ZA-3520 FF, SDR-2-CON-SL-ZA-3530 FF, SDR-2-CON-SL-ZA-3540 FF, SDR-2-CON-SL-ZA-3550 FF, SDR-2-CON-MV-ZA-1300 FF, SDR-2-CON-MV-ZA-1340 FF, SDR-2-CON-TE-ZA-4220 FF, SDR-2-CON-TE-ZA-4270 FF, SDR-2-CON-TE-ZA-4260 FF, SDR-2-CON-TE-ZA-4340 FF, SDR-2-CON-TE-ZA-4350 FF, SDR-2-CON-TE-ZA-4430 FF, SDR-2-CON-TE-ZA-4440 FF, SDR-2-CON-TE-ZA-4520 FF, SDR-2-CON-TE-ZA-4530 FF, SDR-2-CON-CC-ZA-1260 FF, SDR-2-CON-CC-ZA-1270 FF, SDR-2-CON-CC-ZA-1620 FF, SDR-2-CON-CC-ZA-1630 FF, SDR-2-CON-CC-ZA-1640 FF, SDR-2-CON-CC-ZA-1650 FF, SDR-2-CON-CC-ZA-1660 FF, SDR-2-CON-CC-ZA-1720 FF, SDR-2-CON-CC-ZA-1730 FF, SDR-2-CON-CC-ZA-1760 FF, SDR-2-CON-CC-ZA-1770 FF, SDR-2-CON-CC-ZA-1780 FF, SDR-2-CON-CC-ZA-1800 FF, SDR-2-CON-CC-ZA-1810 FF, SDR-2-CON-CC-ZA-1820 FF, SDR-2-CON-CC-ZA-1840 FF, SDR-2-CON-CC-ZA-1850 FF, SDR-2-CON-CC-ZA-1860 FF, SDR-2-CON-CC-ZG-1500 FF, SDR-2-CON-CC-ZG-1540 FF, SDR-2-CON-CC-ZG-1550 FF, SDR-2-CON-CC-ZG-1510 FF, SDR-2-CON-CC-ZG-1560 FF, SDR-2-CON-CC-ZG-1570 FF, SDR-2-CON-CC-ZG-1580 FF, SDR-2-CON-CC-ZG-1520 FF, SDR-2-CON-CC-ZG-1590 FF, SDR-2-CON-CC-ZG-1530 FF, SDR-2-CON-CC-ZG-1600 FF, SDR-2-CON-CC-ZG-1610 FF, SDR-2-CON-CC-ZG-1620 FF, SDR-2-CON-CC-ZG-1630 FF, SDR-2-CON-CC-ZG-1640 FF, SDR-2-CON-CC-ZG-1650 FF, SDR-2-MILS-1050 FF, SDR-2-CON-ST-ZA-5970 FF, SDR-2-CON-SE-ZA-1000, SDR-2-CON-SE-ZA-1420, SDR-2-CON-SE-ZA-1030, SDR-2-CON-SE-ZA-1450, SDR-2-CON-SE-ZA-1460, SDR-2-CON-SE-ZA-1520 |
| 8 | **install** | 2027-06-05 → 2027-06-15 (+10d) | 2027-06-19 → 2027-06-29 (+10d) |  |  |
| SDR-2-CON-IR-ZA-1010 | Installation of HDPE Pipe | 2027-06-05 → 2027-06-15 (+10d) | 2027-06-19 → 2027-06-29 (+10d) | 0d → 5d | SDR-2-TC-PW-1050 SS, SDR-2-CON-PW-ZA-3500, SDR-2-CON-PW-ZA-3600, SDR-2-CON-PW-ZA-2850, SDR-2-CON-PW-ZA-2450, SDR-2-CON-PW-ZA-2550, SDR-2-CON-PW-ZG-1510, SDR-2-CON-PW-ZA-2950, SDR-2-CON-PW-ZA-3050, SDR-2-CON-PW-ZA-3150, SDR-2-CON-IR-ZA-1000 → SDR-2-TC-PW-1050 SS, SDR-2-CON-PW-ZA-3500, SDR-2-CON-PW-ZA-3600, SDR-2-CON-PW-ZA-2850, SDR-2-CON-PW-ZA-2450, SDR-2-CON-PW-ZG-1510, SDR-2-CON-PW-ZA-2950, SDR-2-CON-PW-ZA-3050, SDR-2-CON-PW-ZA-3150, SDR-2-CON-IR-ZA-1000 |
| 9 | **Finishing** | 2027-06-20 → 2027-06-17 (-3d) | 2027-06-30 → 2027-06-28 (-2d) |  |  |
| SDR-2-CON-IR-ZA-1020 | Finishing Works for irrigation | 2027-06-20 → 2027-06-17 (-3d) | 2027-06-30 → 2027-06-28 (-2d) | 0d → 6d | SDR-2-CON-IR-ZA-1010 → SDR-2-CON-IR-ZA-1010 SS+2d |
| 10 | **Repairs** | 2027-07-01 → 2027-06-17 (-14d) | 2027-07-05 → 2027-06-21 (-14d) |  |  |
| SDR-2-CON-IR-ZA-1030 | Repair for irrigation Works | 2027-07-01 → 2027-06-17 (-14d) | 2027-07-05 → 2027-06-21 (-14d) | 0d → 12d | SDR-2-CON-IR-ZA-1020 → SDR-2-CON-IR-ZA-1020 SS |
| 2 | **IRRIGATION WORKS IN ( PH2-COL-MC20 )** | 2027-05-05 → 2027-05-08 (+3d) | 2027-06-21 → 2027-06-23 (+2d) |  |  |
| 7 | **Pre install** | 2027-05-05 → 2027-05-08 (+3d) | 2027-06-02 → 2027-06-05 (+3d) |  |  |
| SDR-2-CON-IR-ZA-2120 | Pre Install for irrigation Works | 2027-05-05 → 2027-05-08 (+3d) | 2027-06-02 → 2027-06-05 (+3d) | 11d → 9d |  |
| 8 | **install** | 2027-05-23 → 2027-05-25 (+2d) | 2027-06-05 → 2027-06-07 (+2d) |  |  |
| SDR-2-CON-IR-ZA-2130 | Installation of HDPE Pipe | 2027-05-23 → 2027-05-25 (+2d) | 2027-06-05 → 2027-06-07 (+2d) | 11d → 9d |  |
| 9 | **Finishing** | 2027-06-06 → 2027-06-08 (+2d) | 2027-06-15 → 2027-06-17 (+2d) |  |  |
| SDR-2-CON-IR-ZA-2140 | Finishing Works for irrigation | 2027-06-06 → 2027-06-08 (+2d) | 2027-06-15 → 2027-06-17 (+2d) | 12d → 10d |  |
| 10 | **Repairs** | 2027-06-16 → 2027-06-19 (+3d) | 2027-06-21 → 2027-06-23 (+2d) |  |  |
| SDR-2-CON-IR-ZA-2150 | Repair for irrigation Works | 2027-06-16 → 2027-06-19 (+3d) | 2027-06-21 → 2027-06-23 (+2d) | 12d → 10d |  |
| 11 | **IRRIGATION WORKS IN ( PH2-A-MCA0 )** | 2027-05-05 → 2027-05-08 (+3d) | 2027-06-21 → 2027-06-23 (+2d) |  |  |
| 7 | **Pre install** | 2027-05-05 → 2027-05-08 (+3d) | 2027-05-24 → 2027-05-26 (+2d) |  |  |
| SDR-2-CON-IR-ZA-2160 | Pre Install for irrigation Works | 2027-05-05 → 2027-05-08 (+3d) | 2027-05-24 → 2027-05-26 (+2d) | 8d → 6d |  |
| 8 | **install** | 2027-05-25 → 2027-05-27 (+2d) | 2027-06-08 → 2027-06-10 (+2d) |  |  |
| SDR-2-CON-IR-ZA-2170 | Installation of HDPE Pipe | 2027-05-25 → 2027-05-27 (+2d) | 2027-06-08 → 2027-06-10 (+2d) | 8d → 6d |  |
| 9 | **Finishing** | 2027-06-09 → 2027-06-12 (+3d) | 2027-06-19 → 2027-06-21 (+2d) |  |  |
| SDR-2-CON-IR-ZA-2180 | Finishing Works for irrigation | 2027-06-09 → 2027-06-12 (+3d) | 2027-06-19 → 2027-06-21 (+2d) | 8d → 6d |  |
| 10 | **Repairs** | 2027-06-20 → 2027-06-22 (+2d) | 2027-06-21 → 2027-06-23 (+2d) |  |  |
| SDR-2-CON-IR-ZA-2190 | Repair for irrigation Works | 2027-06-20 → 2027-06-22 (+2d) | 2027-06-21 → 2027-06-23 (+2d) | 8d → 6d |  |
| 12 | **IRRIGATION WORKS IN ( PH2-A-MCB0 )** | 2027-05-05 → 2027-05-08 (+3d) | 2027-06-26 → 2027-06-28 (+2d) |  |  |
| 7 | **Pre install** | 2027-05-05 → 2027-05-08 (+3d) | 2027-05-26 → 2027-05-29 (+3d) |  |  |
| SDR-2-CON-IR-ZA-2200 | Pre Install for irrigation Works | 2027-05-05 → 2027-05-08 (+3d) | 2027-05-26 → 2027-05-29 (+3d) | 8d → 6d |  |
| 8 | **install** | 2027-05-27 → 2027-05-30 (+3d) | 2027-06-09 → 2027-06-12 (+3d) |  |  |
| SDR-2-CON-IR-ZA-2210 | Installation of HDPE Pipe | 2027-05-27 → 2027-05-30 (+3d) | 2027-06-09 → 2027-06-12 (+3d) | 8d → 6d |  |
| 9 | **Finishing** | 2027-06-10 → 2027-06-13 (+3d) | 2027-06-19 → 2027-06-21 (+2d) |  |  |
| SDR-2-CON-IR-ZA-2220 | Finishing Works for irrigation | 2027-06-10 → 2027-06-13 (+3d) | 2027-06-19 → 2027-06-21 (+2d) | 8d → 6d |  |
| 10 | **Repairs** | 2027-06-20 → 2027-06-22 (+2d) | 2027-06-26 → 2027-06-28 (+2d) |  |  |
| SDR-2-CON-IR-ZA-2230 | Repair for irrigation Works | 2027-06-20 → 2027-06-22 (+2d) | 2027-06-26 → 2027-06-28 (+2d) | 8d → 6d |  |
| 3 | **IRRIGATION WORKS IN ( PH2-A-MCC0 )** |  | 2027-06-24 → 2027-06-27 (+3d) |  |  |
| 7 | **Pre install** |  | 2027-05-26 → 2027-05-29 (+3d) |  |  |
| SDR-2-CON-IR-ZA-2240 | Pre Install for irrigation Works |  | 2027-05-26 → 2027-05-29 (+3d) | 8d → 6d |  |
| 8 | **install** | 2027-05-27 → 2027-05-30 (+3d) | 2027-06-10 → 2027-06-13 (+3d) |  |  |
| SDR-2-CON-IR-ZA-2250 | Installation of HDPE Pipe | 2027-05-27 → 2027-05-30 (+3d) | 2027-06-10 → 2027-06-13 (+3d) | 8d → 6d |  |
| 9 | **Finishing** | 2027-06-12 → 2027-06-14 (+2d) | 2027-06-22 → 2027-06-24 (+2d) |  |  |
| SDR-2-CON-IR-ZA-2260 | Finishing Works for irrigation | 2027-06-12 → 2027-06-14 (+2d) | 2027-06-22 → 2027-06-24 (+2d) | 8d → 6d |  |
| 10 | **Repairs** | 2027-06-23 → 2027-06-26 (+3d) | 2027-06-24 → 2027-06-27 (+3d) |  |  |
| SDR-2-CON-IR-ZA-2270 | Repair for irrigation Works | 2027-06-23 → 2027-06-26 (+3d) | 2027-06-24 → 2027-06-27 (+3d) | 8d → 6d |  |
| 4 | **IRRIGATION WORKS IN ( PH2-A-MCD0 )** |  | 2027-06-12 → 2027-06-14 (+2d) |  |  |
| 7 | **Pre install** |  | 2027-06-02 → 2027-06-05 (+3d) |  |  |
| SDR-2-CON-IR-ZA-2280 | Pre Install for irrigation Works |  | 2027-06-02 → 2027-06-05 (+3d) | 20d → 18d |  |
| 8 | **install** |  | 2027-06-02 → 2027-06-05 (+3d) |  |  |
| SDR-2-CON-IR-ZA-2290 | Installation of HDPE Pipe |  | 2027-06-02 → 2027-06-05 (+3d) | 20d → 18d |  |
| 9 | **Finishing** | 2027-06-03 → 2027-06-06 (+3d) | 2027-06-07 → 2027-06-09 (+2d) |  |  |
| SDR-2-CON-IR-ZA-2300 | Finishing Works for irrigation | 2027-06-03 → 2027-06-06 (+3d) | 2027-06-07 → 2027-06-09 (+2d) | 20d → 18d |  |
| 10 | **Repairs** | 2027-06-08 → 2027-06-10 (+2d) | 2027-06-12 → 2027-06-14 (+2d) |  |  |
| SDR-2-CON-IR-ZA-2310 | Repair for irrigation Works | 2027-06-08 → 2027-06-10 (+2d) | 2027-06-12 → 2027-06-14 (+2d) | 20d → 18d |  |
| 5 | **IRRIGATION WORKS IN ( PH2-A-MCE0 )** |  | 2027-06-26 → 2027-06-28 (+2d) |  |  |
| 7 | **Pre install** |  | 2027-05-26 → 2027-05-29 (+3d) |  |  |
| SDR-2-CON-IR-ZA-2320 | Pre Install for irrigation Works |  | 2027-05-26 → 2027-05-29 (+3d) | 8d → 6d |  |
| 8 | **install** |  | 2027-06-10 → 2027-06-13 (+3d) |  |  |
| SDR-2-CON-IR-ZA-2330 | Installation of HDPE Pipe |  | 2027-06-10 → 2027-06-13 (+3d) | 8d → 6d |  |
| 9 | **Finishing** | 2027-06-12 → 2027-06-14 (+2d) | 2027-06-22 → 2027-06-24 (+2d) |  |  |
| SDR-2-CON-IR-ZA-2340 | Finishing Works for irrigation | 2027-06-12 → 2027-06-14 (+2d) | 2027-06-22 → 2027-06-24 (+2d) | 8d → 6d |  |
| 10 | **Repairs** | 2027-06-23 → 2027-06-26 (+3d) | 2027-06-26 → 2027-06-28 (+2d) |  |  |
| SDR-2-CON-IR-ZA-2350 | Repair for irrigation Works | 2027-06-23 → 2027-06-26 (+3d) | 2027-06-26 → 2027-06-28 (+2d) | 8d → 6d |  |
| 6 | **IRRIGATION WORKS IN ( PH2-A-MCF0 )** | 2027-05-05 → 2027-05-08 (+3d) | 2027-06-26 → 2027-06-28 (+2d) |  |  |
| 7 | **Pre install** | 2027-05-05 → 2027-05-08 (+3d) | 2027-05-26 → 2027-05-29 (+3d) |  |  |
| SDR-2-CON-IR-ZA-2360 | Pre Install for irrigation Works | 2027-05-05 → 2027-05-08 (+3d) | 2027-05-26 → 2027-05-29 (+3d) | 8d → 6d |  |
| 8 | **install** | 2027-05-27 → 2027-05-30 (+3d) | 2027-06-10 → 2027-06-13 (+3d) |  |  |
| SDR-2-CON-IR-ZA-2370 | Installation of HDPE Pipe | 2027-05-27 → 2027-05-30 (+3d) | 2027-06-10 → 2027-06-13 (+3d) | 8d → 6d |  |
| 9 | **Finishing** | 2027-06-12 → 2027-06-14 (+2d) | 2027-06-22 → 2027-06-24 (+2d) |  |  |
| SDR-2-CON-IR-ZA-2380 | Finishing Works for irrigation | 2027-06-12 → 2027-06-14 (+2d) | 2027-06-22 → 2027-06-24 (+2d) | 8d → 6d |  |
| 10 | **Repairs** | 2027-06-23 → 2027-06-26 (+3d) | 2027-06-26 → 2027-06-28 (+2d) |  |  |
| SDR-2-CON-IR-ZA-2390 | Repair for irrigation Works | 2027-06-23 → 2027-06-26 (+3d) | 2027-06-26 → 2027-06-28 (+2d) | 8d → 6d |  |

| ID | Task | Start | Finish | Total float |
| --- | --- | --- | --- | --- |
| 7 | **IRRIGATION WORKS IN ( PH2-A-MCG0 )** | 2027-05-05 → 2027-05-08 (+3d) | 2027-06-26 → 2027-06-28 (+2d) |  |
| 7 | **Pre install** | 2027-05-05 → 2027-05-08 (+3d) | 2027-05-26 → 2027-05-29 (+3d) |  |
| SDR-2-CON-IR-ZA-2400 | Pre Install for irrigation Works | 2027-05-05 → 2027-05-08 (+3d) | 2027-05-26 → 2027-05-29 (+3d) | 8d → 6d |
| 8 | **install** | 2027-05-27 → 2027-05-30 (+3d) | 2027-06-10 → 2027-06-13 (+3d) |  |
| SDR-2-CON-IR-ZA-2410 | Installation of HDPE Pipe | 2027-05-27 → 2027-05-30 (+3d) | 2027-06-10 → 2027-06-13 (+3d) | 8d → 6d |
| 9 | **Finishing** | 2027-06-12 → 2027-06-14 (+2d) | 2027-06-23 → 2027-06-26 (+3d) |  |
| SDR-2-CON-IR-ZA-2420 | Finishing Works for irrigation | 2027-06-12 → 2027-06-14 (+2d) | 2027-06-23 → 2027-06-26 (+3d) | 8d → 6d |
| 10 | **Repairs** | 2027-06-24 → 2027-06-27 (+3d) | 2027-06-26 → 2027-06-28 (+2d) |  |
| SDR-2-CON-IR-ZA-2430 | Repair for irrigation Works | 2027-06-24 → 2027-06-27 (+3d) | 2027-06-26 → 2027-06-28 (+2d) | 8d → 6d |
| 8 | **IRRIGATION WORKS IN ( PH2-A-MCH0 )** | 2027-05-05 → 2027-05-08 (+3d) | 2027-06-26 → 2027-06-28 (+2d) |  |
| 7 | **Pre install** | 2027-05-05 → 2027-05-08 (+3d) | 2027-05-26 → 2027-05-29 (+3d) |  |
| SDR-2-CON-IR-ZA-2440 | Pre Install for irrigation Works | 2027-05-05 → 2027-05-08 (+3d) | 2027-05-26 → 2027-05-29 (+3d) | 8d → 6d |
| 8 | **install** | 2027-05-27 → 2027-05-30 (+3d) | 2027-06-10 → 2027-06-13 (+3d) |  |
| SDR-2-CON-IR-ZA-2450 | Installation of HDPE Pipe | 2027-05-27 → 2027-05-30 (+3d) | 2027-06-10 → 2027-06-13 (+3d) | 8d → 6d |
| 9 | **Finishing** | 2027-06-12 → 2027-06-14 (+2d) | 2027-06-23 → 2027-06-26 (+3d) |  |
| SDR-2-CON-IR-ZA-2460 | Finishing Works for irrigation | 2027-06-12 → 2027-06-14 (+2d) | 2027-06-23 → 2027-06-26 (+3d) | 8d → 6d |
| 10 | **Repairs** | 2027-06-24 → 2027-06-27 (+3d) | 2027-06-26 → 2027-06-28 (+2d) |  |
| SDR-2-CON-IR-ZA-2470 | Repair for irrigation Works | 2027-06-24 → 2027-06-27 (+3d) | 2027-06-26 → 2027-06-28 (+2d) | 8d → 6d |
| 9 | **IRRIGATION WORKS IN ( PH2-ART-MC00 )** |  | 2027-06-26 → 2027-06-28 (+2d) |  |
| 7 | **Pre install** |  | 2027-06-02 → 2027-06-05 (+3d) |  |
| SDR-2-CON-IR-ZA-2480 | Pre Install for irrigation Works |  | 2027-06-02 → 2027-06-05 (+3d) | 22d → 20d |
| 8 | **install** |  | 2027-05-25 → 2027-05-27 (+2d) |  |
| SDR-2-CON-IR-ZA-2490 | Installation of HDPE Pipe |  | 2027-05-25 → 2027-05-27 (+2d) | 22d → 20d |
| 9 | **Finishing** | 2027-05-26 → 2027-05-29 (+3d) | 2027-06-07 → 2027-06-09 (+2d) |  |
| SDR-2-CON-IR-ZA-2500 | Finishing Works for irrigation | 2027-05-26 → 2027-05-29 (+3d) | 2027-06-07 → 2027-06-09 (+2d) | 22d → 20d |
| 10 | **Repairs** | 2027-06-24 → 2027-06-27 (+3d) | 2027-06-26 → 2027-06-28 (+2d) |  |
| SDR-2-CON-IR-ZA-2510 | Repair for irrigation Works | 2027-06-24 → 2027-06-27 (+3d) | 2027-06-26 → 2027-06-28 (+2d) | 8d → 6d |
| 10 | **IRRIGATION WORKS IN ( PH2-ART-MC10 )** |  | 2027-06-26 → 2027-06-28 (+2d) |  |
| 7 | **Pre install** |  | 2027-05-05 → 2027-05-08 (+3d) |  |
| SDR-2-CON-IR-ZA-2520 | Pre Install for irrigation Works |  | 2027-05-05 → 2027-05-08 (+3d) | 3.7d → 1.7d |
| 8 | **install** |  | 2027-05-26 → 2027-05-29 (+3d) |  |
| SDR-2-CON-IR-ZA-2530 | Installation of HDPE Pipe |  | 2027-05-26 → 2027-05-29 (+3d) | 21d → 19d |
| 9 | **Finishing** | 2027-05-27 → 2027-05-30 (+3d) | 2027-06-08 → 2027-06-10 (+2d) |  |
| SDR-2-CON-IR-ZA-2540 | Finishing Works for irrigation | 2027-05-27 → 2027-05-30 (+3d) | 2027-06-08 → 2027-06-10 (+2d) | 21d → 19d |
| 10 | **Repairs** | 2027-06-24 → 2027-06-27 (+3d) | 2027-06-26 → 2027-06-28 (+2d) |  |
| SDR-2-CON-IR-ZA-2550 | Repair for irrigation Works | 2027-06-24 → 2027-06-27 (+3d) | 2027-06-26 → 2027-06-28 (+2d) | 8d → 6d |
| 13 | **Irrigation Controllers** | 2027-05-03 → 2027-05-05 (+2d) | 2027-06-24 → 2027-06-27 (+3d) |  |
| 1 | **Pre install** | 2027-05-03 → 2027-05-05 (+2d) | 2027-06-02 → 2027-06-05 (+3d) |  |
| SDR-2-CON-IR-ZA-2070 | Pre Install of Irrigation controllers | 2027-05-03 → 2027-05-05 (+2d) | 2027-06-02 → 2027-06-05 (+3d) | 14.7d → 12.7d |
| 2 | **install** | 2027-05-15 → 2027-05-23 (+8d) | 2027-06-07 → 2027-06-09 (+2d) |  |
| SDR-2-CON-IR-ZA-2760 | Install Irrigation controllers | 2027-05-15 → 2027-05-23 (+8d) | 2027-06-07 → 2027-06-09 (+2d) | 14.7d → 12.7d |
| 3 | **Finishing** | 2027-06-07 → 2027-06-09 (+2d) | 2027-06-16 → 2027-06-19 (+3d) |  |
| SDR-2-CON-IR-ZA-2770 | Finishing of Irrigation controllers | 2027-06-07 → 2027-06-09 (+2d) | 2027-06-16 → 2027-06-19 (+3d) | 14.7d → 12.7d |
| 4 | **Repairs** | 2027-06-24 → 2027-06-27 (+3d) | 2027-06-24 → 2027-06-27 (+3d) |  |
| SDR-2-CON-IR-ZA-2780 | Repairs of Irrigation controllers | 2027-06-24 → 2027-06-27 (+3d) | 2027-06-24 → 2027-06-27 (+3d) | 8d → 6d |
| 14 | **Decoder Cable & Conduit Works** | 2027-05-03 → 2027-05-05 (+2d) | 2027-06-27 → 2027-06-29 (+2d) |  |
| 1 | **Pre install** | 2027-05-03 → 2027-05-05 (+2d) | 2027-06-02 → 2027-06-05 (+3d) |  |
| SDR-2-CON-IR-ZA-2080 | Pre Install of Decoder Cable & Conduits Works | 2027-05-03 → 2027-05-05 (+2d) | 2027-06-02 → 2027-06-05 (+3d) | 6.7d → 4.7d |
| 2 | **install** | 2027-06-02 → 2027-06-05 (+3d) | 2027-06-20 → 2027-06-22 (+2d) |  |
| SDR-2-CON-IR-ZA-2090 | Install of Decoder Cable & Conduits Works | 2027-06-02 → 2027-06-05 (+3d) | 2027-06-20 → 2027-06-22 (+2d) | 6.7d → 4.7d |
| 3 | **Finishing** | 2027-06-20 → 2027-06-22 (+2d) | 2027-06-26 → 2027-06-28 (+2d) |  |
| SDR-2-CON-IR-ZA-2790 | Finishing of Decoder Cable & Conduits Works | 2027-06-20 → 2027-06-22 (+2d) | 2027-06-26 → 2027-06-28 (+2d) | 6.7d → 4.7d |
| 4 | **Repairs** | 2027-06-26 → 2027-06-28 (+2d) | 2027-06-27 → 2027-06-29 (+2d) |  |
| SDR-2-CON-IR-ZA-2800 | Repair of Decoder Cable & Conduits Works | 2027-06-26 → 2027-06-28 (+2d) | 2027-06-27 → 2027-06-29 (+2d) | 6.7d → 4.7d |
| 15 | **Solar Power System Installation** | 2027-05-03 → 2027-05-05 (+2d) | 2027-06-28 → 2027-06-30 (+2d) |  |
| 1 | **Pre install** | 2027-05-03 → 2027-05-05 (+2d) | 2027-06-02 → 2027-06-05 (+3d) |  |
| SDR-2-CON-IR-ZA-2100 | Pre Install of Solar Power System Installation | 2027-05-03 → 2027-05-05 (+2d) | 2027-06-02 → 2027-06-05 (+3d) | 6.7d → 4.7d |
| 2 | **install** | 2027-06-02 → 2027-06-05 (+3d) | 2027-06-20 → 2027-06-22 (+2d) |  |
| SDR-2-CON-IR-ZA-2810 | Install of Pre Install of Solar Power System Installation | 2027-06-02 → 2027-06-05 (+3d) | 2027-06-20 → 2027-06-22 (+2d) | 6.7d → 4.7d |
| 3 | **Finishing** | 2027-06-20 → 2027-06-22 (+2d) | 2027-06-27 → 2027-06-29 (+2d) |  |
| SDR-2-CON-IR-ZA-2820 | Finishing of Pre Install of Solar Power System Installation | 2027-06-20 → 2027-06-22 (+2d) | 2027-06-27 → 2027-06-29 (+2d) | 6.7d → 4.7d |
| 4 | **Repairs** | 2027-06-27 → 2027-06-29 (+2d) | 2027-06-28 → 2027-06-30 (+2d) |  |
| SDR-2-CON-IR-ZA-2830 | Repair of Solar Power System Installation | 2027-06-27 → 2027-06-29 (+2d) | 2027-06-28 → 2027-06-30 (+2d) | 6.7d → 4.7d |
| 16 | **System Integration & Programming** | 2027-05-03 → 2027-05-05 (+2d) | 2027-06-28 → 2027-06-30 (+2d) |  |
| 1 | **Pre install** | 2027-05-03 → 2027-05-05 (+2d) | 2027-06-02 → 2027-06-05 (+3d) |  |
| SDR-2-CON-IR-ZA-2110 | Pre Install of System Integration & Programming | 2027-05-03 → 2027-05-05 (+2d) | 2027-06-02 → 2027-06-05 (+3d) | 14.7d → 12.7d |
| 2 | **install** | 2027-05-15 → 2027-05-23 (+8d) | 2027-06-07 → 2027-06-09 (+2d) |  |
| SDR-2-CON-IR-ZA-2840 | Install of System Integration & Programming | 2027-05-15 → 2027-05-23 (+8d) | 2027-06-07 → 2027-06-09 (+2d) | 14.7d → 12.7d |
| 3 | **Finishing** | 2027-06-07 → 2027-06-09 (+2d) | 2027-06-16 → 2027-06-19 (+3d) |  |
| SDR-2-CON-IR-ZA-2850 | Finishing of System Integration & Programming | 2027-06-07 → 2027-06-09 (+2d) | 2027-06-16 → 2027-06-19 (+3d) | 14.7d → 12.7d |

| ID | Task | Start | Finish | Total float |
| --- | --- | --- | --- | --- |
| 4 | **Repairs** | 2027-06-27 → 2027-06-29 (+2d) | 2027-06-28 → 2027-06-30 (+2d) |  |
| SDR-2-CON-IR-ZA-2860 | Repair of System Integration & Programming | 2027-06-27 → 2027-06-29 (+2d) | 2027-06-28 → 2027-06-30 (+2d) | 6.7d → 4.7d |
| 1 | **Landscape Works** | 2027-05-03 → 2027-05-06 (+3d) | 2027-06-28 → 2027-06-30 (+2d) |  |
| 1 | **GROUND COVER** | 2027-05-03 → 2027-05-06 (+3d) | 2027-06-02 → 2027-06-05 (+3d) |  |
| SDR-2-CON-LS-ZA-1000 | Clearing & grubbing of landscape areas | 2027-05-03 → 2027-05-06 (+3d) | 2027-05-26 → 2027-05-29 (+3d) | 3.7d → 1d |
| SDR-2-CON-LS-ZA-1010 | Grass laying | 2027-05-11 → 2027-05-15 (+4d) | 2027-06-02 → 2027-06-05 (+3d) | 11.7d → 9d |
| 2 | **Trees** | 2027-06-02 → 2027-06-06 (+4d) | 2027-06-22 → 2027-06-24 (+2d) |  |
| SDR-2-CON-LS-ZA-1020 | Albizia lebbeck tress planting. | 2027-06-02 → 2027-06-06 (+4d) | 2027-06-19 → 2027-06-21 (+2d) | 11.7d → 9d |
| SDR-2-CON-LS-ZA-1030 | Tabopia tress planting. | 2027-06-02 → 2027-06-06 (+4d) | 2027-06-19 → 2027-06-21 (+2d) | 11.7d → 9d |
| SDR-2-CON-LS-ZA-1040 | Plumeria alba tress planting. | 2027-06-06 → 2027-06-09 (+3d) | 2027-06-22 → 2027-06-24 (+2d) | 11.7d → 9d |
| SDR-2-CON-LS-ZA-1050 | Cassia glauca tress planting. | 2027-06-06 → 2027-06-09 (+3d) | 2027-06-22 → 2027-06-24 (+2d) | 11.7d → 9d |
| 3 | **Miscellaneous landscaping items** | 2027-06-13 → 2027-06-15 (+2d) | 2027-06-28 → 2027-06-30 (+2d) |  |
| SDR-2-CON-LS-ZA-1060 | Gravel/Stone mulch: 75mm thick Hard, durable stone, washed free of loam, sand, clay, | 2027-06-13 → 2027-06-15 (+2d) | 2027-06-28 → 2027-06-30 (+2d) | 6.7d → 4.7d |
| ZG | **ZONE G** | 2027-05-03 → 2027-05-05 (+2d) | 2027-07-03 → 2027-07-05 (+2d) |  |
| 2 | **Irrigation Works** | 2027-05-03 → 2027-05-05 (+2d) | 2027-07-03 → 2027-07-05 (+2d) |  |
| 11 | **IRRIGATION WORKS IN ( PH2-G-MCE0 )** | 2027-05-05 → 2027-05-08 (+3d) | 2027-07-03 → 2027-07-05 (+2d) |  |
| 7 | **Pre install** | 2027-05-05 → 2027-05-08 (+3d) | 2027-06-02 → 2027-06-05 (+3d) |  |
| SDR-2-CON-IR-ZA-2560 | Pre Install for irrigation Works | 2027-05-05 → 2027-05-08 (+3d) | 2027-06-02 → 2027-06-05 (+3d) | 2d → 0d |
| 8 | **install** | 2027-06-03 → 2027-06-06 (+3d) | 2027-06-17 → 2027-06-20 (+3d) |  |
| SDR-2-CON-IR-ZA-2570 | Installation of HDPE Pipe | 2027-06-03 → 2027-06-06 (+3d) | 2027-06-17 → 2027-06-20 (+3d) | 2d → 0d |
| 9 | **Finishing** | 2027-06-19 → 2027-06-21 (+2d) | 2027-06-29 → 2027-07-01 (+2d) |  |
| SDR-2-CON-IR-ZA-2580 | Finishing Works for irrigation | 2027-06-19 → 2027-06-21 (+2d) | 2027-06-29 → 2027-07-01 (+2d) | 2d → 0d |
| 10 | **Repairs** | 2027-06-30 → 2027-07-03 (+3d) | 2027-07-03 → 2027-07-05 (+2d) |  |
| SDR-2-CON-IR-ZA-2590 | Repair for irrigation Works | 2027-06-30 → 2027-07-03 (+3d) | 2027-07-03 → 2027-07-05 (+2d) | 2d → 0d |
| 5 | **IRRIGATION WORKS IN ( PH2-G-MCZ0 )** | 2027-05-05 → 2027-05-08 (+3d) | 2027-07-03 → 2027-07-05 (+2d) |  |
| 7 | **Pre install** | 2027-05-05 → 2027-05-08 (+3d) | 2027-06-02 → 2027-06-05 (+3d) |  |
| SDR-2-CON-IR-ZA-2600 | Pre Install for irrigation Works | 2027-05-05 → 2027-05-08 (+3d) | 2027-06-02 → 2027-06-05 (+3d) | 2d → 0d |
| 8 | **install** | 2027-06-03 → 2027-06-06 (+3d) | 2027-06-17 → 2027-06-20 (+3d) |  |
| SDR-2-CON-IR-ZA-2610 | Installation of HDPE Pipe | 2027-06-03 → 2027-06-06 (+3d) | 2027-06-17 → 2027-06-20 (+3d) | 2d → 0d |
| 9 | **Finishing** | 2027-06-19 → 2027-06-21 (+2d) | 2027-06-29 → 2027-07-01 (+2d) |  |
| SDR-2-CON-IR-ZA-2620 | Finishing Works for irrigation | 2027-06-19 → 2027-06-21 (+2d) | 2027-06-29 → 2027-07-01 (+2d) | 2d → 0d |
| 10 | **Repairs** | 2027-06-30 → 2027-07-03 (+3d) | 2027-07-03 → 2027-07-05 (+2d) |  |
| SDR-2-CON-IR-ZA-2630 | Repair for irrigation Works | 2027-06-30 → 2027-07-03 (+3d) | 2027-07-03 → 2027-07-05 (+2d) | 2d → 0d |
| 1 | **IRRIGATION WORKS IN ( PH2-G-MCA0 )** | 2027-05-05 → 2027-05-08 (+3d) | 2027-07-03 → 2027-07-05 (+2d) |  |
| 7 | **Pre install** | 2027-05-05 → 2027-05-08 (+3d) | 2027-06-01 → 2027-06-03 (+2d) |  |
| SDR-2-CON-IR-ZA-2640 | Pre Install for irrigation Works | 2027-05-05 → 2027-05-08 (+3d) | 2027-06-01 → 2027-06-03 (+2d) | 2d → 0d |
| 8 | **install** | 2027-06-02 → 2027-06-05 (+3d) | 2027-06-16 → 2027-06-19 (+3d) |  |
| SDR-2-CON-IR-ZA-2650 | Installation of HDPE Pipe | 2027-06-02 → 2027-06-05 (+3d) | 2027-06-16 → 2027-06-19 (+3d) | 2d → 0d |
| 9 | **Finishing** | 2027-06-17 → 2027-06-20 (+3d) | 2027-06-30 → 2027-07-03 (+3d) |  |
| SDR-2-CON-IR-ZA-2660 | Finishing Works for irrigation | 2027-06-17 → 2027-06-20 (+3d) | 2027-06-30 → 2027-07-03 (+3d) | 2d → 0d |
| 10 | **Repairs** | 2027-07-01 → 2027-07-04 (+3d) | 2027-07-03 → 2027-07-05 (+2d) |  |
| SDR-2-CON-IR-ZA-2670 | Repair for irrigation Works | 2027-07-01 → 2027-07-04 (+3d) | 2027-07-03 → 2027-07-05 (+2d) | 2d → 0d |
| 2 | **IRRIGATION WORKS IN ( PH2-G-MCF0 )** | 2027-05-05 → 2027-05-08 (+3d) | 2027-07-03 → 2027-07-05 (+2d) |  |
| 7 | **Pre install** | 2027-05-05 → 2027-05-08 (+3d) | 2027-06-02 → 2027-06-05 (+3d) |  |
| SDR-2-CON-IR-ZA-2680 | Pre Install for irrigation Works | 2027-05-05 → 2027-05-08 (+3d) | 2027-06-02 → 2027-06-05 (+3d) | 2d → 0d |
| 8 | **install** | 2027-06-03 → 2027-06-06 (+3d) | 2027-06-17 → 2027-06-20 (+3d) |  |
| SDR-2-CON-IR-ZA-2690 | Installation of HDPE Pipe | 2027-06-03 → 2027-06-06 (+3d) | 2027-06-17 → 2027-06-20 (+3d) | 2d → 0d |
| 9 | **Finishing** | 2027-06-19 → 2027-06-21 (+2d) | 2027-06-30 → 2027-07-03 (+3d) |  |
| SDR-2-CON-IR-ZA-2700 | Finishing Works for irrigation | 2027-06-19 → 2027-06-21 (+2d) | 2027-06-30 → 2027-07-03 (+3d) | 2d → 0d |
| 10 | **Repairs** | 2027-07-01 → 2027-07-04 (+3d) | 2027-07-03 → 2027-07-05 (+2d) |  |
| SDR-2-CON-IR-ZA-2710 | Repair for irrigation Works | 2027-07-01 → 2027-07-04 (+3d) | 2027-07-03 → 2027-07-05 (+2d) | 2d → 0d |
| 3 | **IRRIGATION WORKS IN ( PH2-G-MCG0 )** | 2027-05-05 → 2027-05-08 (+3d) | 2027-07-03 → 2027-07-05 (+2d) |  |
| 7 | **Pre install** | 2027-05-05 → 2027-05-08 (+3d) | 2027-06-01 → 2027-06-03 (+2d) |  |
| SDR-2-CON-IR-ZA-2720 | Pre Install for irrigation Works | 2027-05-05 → 2027-05-08 (+3d) | 2027-06-01 → 2027-06-03 (+2d) | 2d → 0d |
| 8 | **install** | 2027-06-02 → 2027-06-05 (+3d) | 2027-06-16 → 2027-06-19 (+3d) |  |
| SDR-2-CON-IR-ZA-2730 | Installation of HDPE Pipe | 2027-06-02 → 2027-06-05 (+3d) | 2027-06-16 → 2027-06-19 (+3d) | 2d → 0d |
| 9 | **Finishing** | 2027-06-17 → 2027-06-20 (+3d) | 2027-06-30 → 2027-07-03 (+3d) |  |
| SDR-2-CON-IR-ZA-2740 | Finishing Works for irrigation | 2027-06-17 → 2027-06-20 (+3d) | 2027-06-30 → 2027-07-03 (+3d) | 2d → 0d |
| 10 | **Repairs** | 2027-07-01 → 2027-07-04 (+3d) | 2027-07-03 → 2027-07-05 (+2d) |  |
| SDR-2-CON-IR-ZA-2750 | Repair for irrigation Works | 2027-07-01 → 2027-07-04 (+3d) | 2027-07-03 → 2027-07-05 (+2d) | 2d → 0d |
| 13 | **Irrigation Controllers** | 2027-05-03 → 2027-05-05 (+2d) | 2027-07-03 → 2027-07-05 (+2d) |  |
| 1 | **Pre install** | 2027-05-03 → 2027-05-05 (+2d) | 2027-06-02 → 2027-06-05 (+3d) |  |
| SDR-2-CON-IR-ZA-2870 | Pre Install of Irrigation controllers | 2027-05-03 → 2027-05-05 (+2d) | 2027-06-02 → 2027-06-05 (+3d) | 3.7d → 1.7d |
| 2 | **install** | 2027-06-02 → 2027-06-05 (+3d) | 2027-06-20 → 2027-06-22 (+2d) |  |
| SDR-2-CON-IR-ZA-2880 | Install Irrigation controllers | 2027-06-02 → 2027-06-05 (+3d) | 2027-06-20 → 2027-06-22 (+2d) | 3.7d → 1.7d |
| 3 | **Finishing** | 2027-06-20 → 2027-06-22 (+2d) | 2027-06-29 → 2027-07-01 (+2d) |  |
| SDR-2-CON-IR-ZA-2890 | Finishing of Irrigation controllers | 2027-06-20 → 2027-06-22 (+2d) | 2027-06-29 → 2027-07-01 (+2d) | 3.7d → 1.7d |
| 4 | **Repairs** | 2027-07-01 → 2027-07-04 (+3d) | 2027-07-03 → 2027-07-05 (+2d) |  |
| SDR-2-CON-IR-ZA-2900 | Repairs of Irrigation controllers | 2027-07-01 → 2027-07-04 (+3d) | 2027-07-03 → 2027-07-05 (+2d) | 2d → 0d |
| 14 | **Decoder Cable & Conduit Works** | 2027-05-03 → 2027-05-05 (+2d) | 2027-07-03 → 2027-07-05 (+2d) |  |

| ID | Task | Start | Finish | Total float |
| --- | --- | --- | --- | --- |
| 1 | **Pre install** | 2027-05-03 → 2027-05-05 (+2d) | 2027-06-02 → 2027-06-05 (+3d) |  |
| SDR-2-CON-IR-ZA-2910 | Pre Install of Decoder Cable & Conduits Works | 2027-05-03 → 2027-05-05 (+2d) | 2027-06-02 → 2027-06-05 (+3d) | 3.7d → 1.7d |
| 2 | **install** | 2027-06-02 → 2027-06-05 (+3d) | 2027-06-20 → 2027-06-22 (+2d) |  |
| SDR-2-CON-IR-ZA-2920 | Install of Decoder Cable & Conduits Works | 2027-06-02 → 2027-06-05 (+3d) | 2027-06-20 → 2027-06-22 (+2d) | 3.7d → 1.7d |
| 3 | **Finishing** | 2027-06-20 → 2027-06-22 (+2d) | 2027-06-30 → 2027-07-03 (+3d) |  |
| SDR-2-CON-IR-ZA-2930 | Finishing of Decoder Cable & Conduits Works | 2027-06-20 → 2027-06-22 (+2d) | 2027-06-30 → 2027-07-03 (+3d) | 3.7d → 1.7d |
| 4 | **Repairs** | 2027-07-03 → 2027-07-05 (+2d) | 2027-07-03 → 2027-07-05 (+2d) |  |
| SDR-2-CON-IR-ZA-2940 | Repair of Decoder Cable & Conduits Works | 2027-07-03 → 2027-07-05 (+2d) | 2027-07-03 → 2027-07-05 (+2d) | 2d → 0d |
| 15 | **Solar Power System Installation** | 2027-05-03 → 2027-05-05 (+2d) | 2027-07-01 → 2027-07-04 (+3d) |  |
| 1 | **Pre install** | 2027-05-03 → 2027-05-05 (+2d) | 2027-06-02 → 2027-06-05 (+3d) |  |
| SDR-2-CON-IR-ZA-2950 | Pre Install of Solar Power System Installation | 2027-05-03 → 2027-05-05 (+2d) | 2027-06-02 → 2027-06-05 (+3d) | 3.7d → 1.7d |
| 2 | **install** | 2027-06-02 → 2027-06-05 (+3d) | 2027-06-20 → 2027-06-22 (+2d) |  |
| SDR-2-CON-IR-ZA-2960 | Install of Pre Install of Solar Power System Installation | 2027-06-02 → 2027-06-05 (+3d) | 2027-06-20 → 2027-06-22 (+2d) | 3.7d → 1.7d |
| 3 | **Finishing** | 2027-06-20 → 2027-06-22 (+2d) | 2027-06-28 → 2027-06-30 (+2d) |  |
| SDR-2-CON-IR-ZA-2970 | Finishing of Pre Install of Solar Power System Installation | 2027-06-20 → 2027-06-22 (+2d) | 2027-06-28 → 2027-06-30 (+2d) | 3.7d → 1.7d |
| 4 | **Repairs** | 2027-06-28 → 2027-06-30 (+2d) | 2027-07-01 → 2027-07-04 (+3d) |  |
| SDR-2-CON-IR-ZA-2980 | Repair of Solar Power System Installation | 2027-06-28 → 2027-06-30 (+2d) | 2027-07-01 → 2027-07-04 (+3d) | 3.7d → 1.7d |
| 1 | **Landscape Works** | 2027-05-03 → 2027-05-06 (+3d) | 2027-07-03 → 2027-07-05 (+2d) |  |
| 1 | **GROUND COVER** | 2027-05-03 → 2027-05-06 (+3d) | 2027-06-12 → 2027-06-14 (+2d) |  |
| SDR-2-CON-LS-ZG-1000 | Clearing & grubbing of landscape areas | 2027-05-03 → 2027-05-06 (+3d) | 2027-05-26 → 2027-05-29 (+3d) | 3.7d → 1d |
| SDR-2-CON-LS-ZG-1010 | Grass laying | 2027-05-29 → 2027-05-31 (+2d) | 2027-06-12 → 2027-06-14 (+2d) | 2d → 0d |
| 2 | **Trees** | 2027-06-13 → 2027-06-15 (+2d) | 2027-07-03 → 2027-07-05 (+2d) |  |
| SDR-2-CON-LS-ZG-1020 | Albizia lebbeck tress planting. | 2027-06-13 → 2027-06-15 (+2d) | 2027-07-03 → 2027-07-05 (+2d) | 2d → 0d |
| SDR-2-CON-LS-ZG-1030 | Tabopia tress planting. | 2027-06-13 → 2027-06-15 (+2d) | 2027-07-03 → 2027-07-05 (+2d) | 2d → 0d |
| SDR-2-CON-LS-ZG-1040 | Plumeria alba tress planting. | 2027-06-13 → 2027-06-15 (+2d) | 2027-07-03 → 2027-07-05 (+2d) | 2d → 0d |
| SDR-2-CON-LS-ZG-1050 | Cassia glauca tress planting. | 2027-06-13 → 2027-06-15 (+2d) | 2027-07-03 → 2027-07-05 (+2d) | 2d → 0d |
| 3 | **Miscellaneous landscaping items** | 2027-06-13 → 2027-06-15 (+2d) | 2027-07-03 → 2027-07-05 (+2d) |  |
| SDR-2-CON-LS-ZG-1060 | Gravel/Stone mulch: 75mm thick Hard, durable stone, washed free of loam, sand, clay, | 2027-06-13 → 2027-06-15 (+2d) | 2027-07-03 → 2027-07-05 (+2d) | 2d → 0d |
| CC | **CCTV Works** |  | 2027-04-27 → 2027-05-04 (+7d) |  |
| ZA | **ZONE A** |  | 2027-04-27 → 2027-05-04 (+7d) |  |
| 1 | **Poles 1st and 2nd Fix Works** |  | 2027-01-09 → 2027-01-16 (+7d) |  |
| 1 | **Excavation** |  | 2026-12-12 → 2026-12-19 (+7d) |  |
| SDR-2-CON-CC-ZA-1000 | Excavation 1Sst & 2nd Fix Works |  | 2026-12-12 → 2026-12-19 (+7d) | 14d → 9d |
| 2 | **Install Footings** |  | 2026-12-22 → 2026-12-29 (+7d) |  |
| SDR-2-CON-CC-ZA-1030 | Install Footings |  | 2026-12-22 → 2026-12-29 (+7d) | 5d → 0d |
| 3 | **Backfilling** | 2026-12-23 → 2026-12-30 (+7d) | 2026-12-30 → 2027-01-06 (+7d) |  |
| SDR-2-CON-CC-ZA-1050 | Backfilling 1Sst & 2nd Fix Works | 2026-12-23 → 2026-12-30 (+7d) | 2026-12-30 → 2027-01-06 (+7d) | 5d → 0d |
| 4 | **Install pole** | 2026-12-31 → 2027-01-07 (+7d) | 2027-01-09 → 2027-01-16 (+7d) |  |
| SDR-2-CON-CC-ZA-1060 | Install Pole | 2026-12-31 → 2027-01-07 (+7d) | 2027-01-09 → 2027-01-16 (+7d) | 5d → 0d |
| 2 | **25m Pole Package** |  | 2027-04-14 → 2027-04-21 (+7d) |  |
| 1 | **Excavation** |  | 2027-01-09 → 2027-01-16 (+7d) |  |
| SDR-2-CON-CC-ZA-1080 | 25 Meters Pole Excavation |  | 2027-01-09 → 2027-01-16 (+7d) | 5d → 0d |
| 2 | **Install Footings** |  | 2027-01-09 → 2027-01-16 (+7d) |  |
| SDR-2-CON-CC-ZA-1090 | 25 Meters pole installation Footings |  | 2027-01-09 → 2027-01-16 (+7d) | 45d → 39d |
| 3 | **Backfilling** | 2027-03-06 → 2027-03-17 (+11d) | 2027-04-03 → 2027-04-10 (+7d) |  |
| SDR-2-CON-CC-ZA-1100 | 25 Meters pole Backfilling | 2027-03-06 → 2027-03-17 (+11d) | 2027-04-03 → 2027-04-10 (+7d) | 7d → 1d |
| 4 | **Install pole** | 2027-03-22 → 2027-03-29 (+7d) | 2027-04-14 → 2027-04-21 (+7d) |  |
| SDR-2-CON-CC-ZA-1110 | 25 Meters pole installation | 2027-03-22 → 2027-03-29 (+7d) | 2027-04-14 → 2027-04-21 (+7d) | 7d → 1d |
| 3 | **7m Pole Package** |  | 2027-03-14 → 2027-03-21 (+7d) |  |
| 1 | **Excavation** |  | 2027-01-09 → 2027-01-16 (+7d) |  |
| SDR-2-CON-CC-ZA-1240 | 7m Meters Pole Excavation |  | 2027-01-09 → 2027-01-16 (+7d) | 5d → 0d |
| 2 | **Install Footings** |  | 2027-01-09 → 2027-01-16 (+7d) |  |
| SDR-2-CON-CC-ZA-1250 | 7m Meters pole installation Footings |  | 2027-01-09 → 2027-01-16 (+7d) | 34d → 28d |
| 3 | **Backfilling** | 2027-01-18 → 2027-01-25 (+7d) | 2027-02-10 → 2027-02-17 (+7d) |  |
| SDR-2-CON-CC-ZA-1260 | 7m Meters pole Backfilling | 2027-01-18 → 2027-01-25 (+7d) | 2027-02-10 → 2027-02-17 (+7d) | 34d → 28d |
| 4 | **Install pole** | 2027-02-13 → 2027-02-20 (+7d) | 2027-03-14 → 2027-03-21 (+7d) |  |
| SDR-2-CON-CC-ZA-1270 | 7 Meters pole Installation | 2027-02-13 → 2027-02-20 (+7d) | 2027-03-14 → 2027-03-21 (+7d) | 34d → 28d |
| 4 | **35m Pole Package** |  | 2027-04-27 → 2027-05-04 (+7d) |  |
| 1 | **Excavation** |  | 2027-01-09 → 2027-01-16 (+7d) |  |
| SDR-2-CON-CC-ZA-1380 | 35m Meters Pole Excavation |  | 2027-01-09 → 2027-01-16 (+7d) | 5d → 0d |
| 2 | **Install Footings** |  | 2027-01-10 → 2027-01-17 (+7d) |  |
| SDR-2-CON-CC-ZA-1390 | 35m Meters pole installation Footings |  | 2027-01-10 → 2027-01-17 (+7d) | 97d → 91d |
| 3 | **Backfilling** | 2027-03-16 → 2027-03-23 (+7d) | 2027-04-04 → 2027-04-11 (+7d) |  |
| SDR-2-CON-CC-ZA-1400 | 35m Meters pole Backfilling | 2027-03-16 → 2027-03-23 (+7d) | 2027-04-04 → 2027-04-11 (+7d) | 54d → 48d |
| 4 | **Install pole** | 2027-04-05 → 2027-04-12 (+7d) | 2027-04-27 → 2027-05-04 (+7d) |  |
| SDR-2-CON-CC-ZA-1410 | 35 Meters pole Installation | 2027-04-05 → 2027-04-12 (+7d) | 2027-04-27 → 2027-05-04 (+7d) | 54d → 48d |
| 5 | **Control Room** | 2027-01-27 → 2027-02-03 (+7d) | 2027-02-18 → 2027-02-27 (+9d) |  |
| SDR-2-CON-CC-ZA-1500 | Existing Control Room Preparation to accomodate the new equipment | 2027-01-27 → 2027-02-03 (+7d) | 2027-02-02 → 2027-02-09 (+7d) | 5d → 0d |
| SDR-2-CON-CC-ZA-1510 | VMS Server | 2027-01-27 → 2027-02-03 (+7d) | 2027-01-31 → 2027-02-07 (+7d) | 5d → 0d |
| SDR-2-CON-CC-ZA-1520 | Surveillance-optimized server for recording CCTV support simultaneous cameras stream and recording at high resolution | 2027-01-28 → 2027-02-04 (+7d) | 2027-02-01 → 2027-02-08 (+7d) | 5d → 0d |

| ID | Task | Start | Finish | Total float |
| --- | --- | --- | --- | --- |
| SDR-2-CON-CC-ZA-1530 | Video analytic computing hardware | 2027-01-30 → 2027-02-06 (+7d) | 2027-02-02 → 2027-02-09 (+7d) | 5d → 0d |
| SDR-2-CON-CC-ZA-1540 | Workstation | 2027-01-31 → 2027-02-07 (+7d) | 2027-02-08 → 2027-02-15 (+7d) | 5d → 0d |
| SDR-2-CON-CC-ZA-1550 | Professional LED screen 32 inch for workstations | 2027-02-01 → 2027-02-08 (+7d) | 2027-02-04 → 2027-02-11 (+7d) | 5d → 0d |
| SDR-2-CON-CC-ZA-1560 | Professional 55" video wall cube | 2027-02-03 → 2027-02-10 (+7d) | 2027-02-07 → 2027-02-14 (+7d) | 5d → 0d |
| SDR-2-CON-CC-ZA-1570 | Industrial Rack-Mount Managed Modular Gigabit Ethernet PoE Switch (24-Port) for outdoor application | 2027-02-09 → 2027-02-16 (+7d) | 2027-02-17 → 2027-02-25 (+8d) | 5d → 0d |
| SDR-2-CON-CC-ZA-1580 | SFP 1000Base-X SM | 2027-02-09 → 2027-02-16 (+7d) | 2027-02-16 → 2027-02-24 (+8d) | 5d → 0d |
| SDR-2-CON-CC-ZA-1590 | Professional joystick for accurate control of PTZ and PT Thermal Cameras. | 2027-02-10 → 2027-02-17 (+7d) | 2027-02-14 → 2027-02-21 (+7d) | 5d → 0d |
| SDR-2-CON-CC-ZA-1600 | Fiber patch panel including all related accessories | 2027-02-11 → 2027-02-18 (+7d) | 2027-02-18 → 2027-02-27 (+9d) | 5d → 0d |
| SDR-2-CON-CC-ZA-1610 | UPS 5000VA to power for all servers, monitor, and switch in the cabinet | 2027-02-11 → 2027-02-18 (+7d) | 2027-02-15 → 2027-02-23 (+8d) | 5d → 0d |
| SDR-2-CON-CC-ZA-1620 | Outdoor Carrier Class Shielded Ethernet Cable for P-to-P access points 305 meter | 2027-02-11 → 2027-02-18 (+7d) | 2027-02-18 → 2027-02-27 (+9d) | 27d → 21d |
| 6 | **Licenses,Documentation,Testing and Training** | 2027-02-15 → 2027-02-23 (+8d) | 2027-02-21 → 2027-03-01 (+8d) |  |
| SDR-2-CON-CC-ZA-1630 | VMS Lifetime Licenses | 2027-02-15 → 2027-02-23 (+8d) | 2027-02-21 → 2027-03-01 (+8d) | 49d → 43d |
| SDR-2-CON-CC-ZA-1640 | Camera-Interlink License | 2027-02-15 → 2027-02-23 (+8d) | 2027-02-21 → 2027-03-01 (+8d) | 49d → 43d |
| SDR-2-CON-CC-ZA-1650 | Video analytics license package | 2027-02-15 → 2027-02-23 (+8d) | 2027-02-18 → 2027-02-27 (+9d) | 49d → 43d |
| SDR-2-CON-CC-ZA-1660 | Video analytics license for ANPR | 2027-02-15 → 2027-02-23 (+8d) | 2027-02-18 → 2027-02-27 (+9d) | 49d → 43d |
| ZG | **ZONE G** |  | 2027-04-14 → 2027-04-21 (+7d) |  |
| 1 | **Poles 1st and 2nd Fix Works** |  | 2026-11-05 → 2026-11-12 (+7d) |  |
| 1 | **Excavation** |  | 2026-10-19 → 2026-10-26 (+7d) |  |
| SDR-2-CON-CC-ZA-1670 | Excavation 1Sst & 2nd Fix Works |  | 2026-10-19 → 2026-10-26 (+7d) | 17d → 11d |
| 2 | **Install Footings** |  | 2026-10-19 → 2026-10-26 (+7d) |  |
| SDR-2-CON-CC-ZA-1700 | Install Footings |  | 2026-10-19 → 2026-10-26 (+7d) | 17d → 11d |
| 3 | **Backfilling** | 2026-10-20 → 2026-10-27 (+7d) | 2026-10-27 → 2026-11-03 (+7d) |  |
| SDR-2-CON-CC-ZA-1720 | Backfilling 1Sst & 2nd Fix Works | 2026-10-20 → 2026-10-27 (+7d) | 2026-10-27 → 2026-11-03 (+7d) | 17d → 11d |
| 4 | **Install pole** | 2026-10-28 → 2026-11-04 (+7d) | 2026-11-05 → 2026-11-12 (+7d) |  |
| SDR-2-CON-CC-ZA-1730 | Install Pole | 2026-10-28 → 2026-11-04 (+7d) | 2026-11-05 → 2026-11-12 (+7d) | 17d → 11d |
| 2 | **25m Pole Package** |  | 2027-01-28 → 2027-02-04 (+7d) |  |
| 1 | **Excavation** |  | 2026-11-05 → 2026-11-12 (+7d) |  |
| SDR-2-CON-CC-ZA-1750 | 25 Meters Pole Excavation |  | 2026-11-05 → 2026-11-12 (+7d) | 17d → 11d |
| 2 | **Install Footings** | 2026-11-07 → 2026-11-14 (+7d) | 2026-11-30 → 2026-12-07 (+7d) |  |
| SDR-2-CON-CC-ZA-1760 | 25 Meters pole installation Footings | 2026-11-07 → 2026-11-14 (+7d) | 2026-11-30 → 2026-12-07 (+7d) | 18d → 12d |
| 3 | **Backfilling** | 2026-12-01 → 2026-12-08 (+7d) | 2026-12-23 → 2026-12-30 (+7d) |  |
| SDR-2-CON-CC-ZA-1770 | 25 Meters pole Backfilling | 2026-12-01 → 2026-12-08 (+7d) | 2026-12-23 → 2026-12-30 (+7d) | 18d → 12d |
| 4 | **Install pole** | 2027-01-05 → 2027-01-12 (+7d) | 2027-01-28 → 2027-02-04 (+7d) |  |
| SDR-2-CON-CC-ZA-1780 | 25 Meters pole installation | 2027-01-05 → 2027-01-12 (+7d) | 2027-01-28 → 2027-02-04 (+7d) | 18d → 12d |
| 3 | **7m Pole Package** |  | 2027-03-16 → 2027-03-23 (+7d) |  |
| 1 | **Excavation** |  | 2026-11-05 → 2026-11-12 (+7d) |  |
| SDR-2-CON-CC-ZA-1790 | 7m Meters Pole Excavation |  | 2026-11-05 → 2026-11-12 (+7d) | 17d → 11d |
| 2 | **Install Footings** | 2026-11-07 → 2026-11-14 (+7d) | 2026-11-29 → 2026-12-06 (+7d) |  |
| SDR-2-CON-CC-ZA-1800 | 7m Meters pole installation Footings | 2026-11-07 → 2026-11-14 (+7d) | 2026-11-29 → 2026-12-06 (+7d) | 45d → 39d |
| 3 | **Backfilling** | 2026-11-30 → 2026-12-07 (+7d) | 2026-12-22 → 2026-12-29 (+7d) |  |
| SDR-2-CON-CC-ZA-1810 | 7m Meters pole Backfilling | 2026-11-30 → 2026-12-07 (+7d) | 2026-12-22 → 2026-12-29 (+7d) | 45d → 39d |
| 4 | **Install pole** | 2027-02-15 → 2027-02-23 (+8d) | 2027-03-16 → 2027-03-23 (+7d) |  |
| SDR-2-CON-CC-ZA-1820 | 7 Meters pole Installation | 2027-02-15 → 2027-02-23 (+8d) | 2027-03-16 → 2027-03-23 (+7d) | 10d → 4d |
| 4 | **35m Pole Package** |  | 2027-01-04 → 2027-01-11 (+7d) |  |
| 1 | **Excavation** |  | 2026-11-05 → 2026-11-12 (+7d) |  |
| SDR-2-CON-CC-ZA-1830 | 35m Meters Pole Excavation |  | 2026-11-05 → 2026-11-12 (+7d) | 37d → 32d |
| 2 | **Install Footings** | 2026-11-07 → 2026-11-14 (+7d) | 2026-11-29 → 2026-12-06 (+7d) |  |
| SDR-2-CON-CC-ZA-1840 | 35m Meters pole installation Footings | 2026-11-07 → 2026-11-14 (+7d) | 2026-11-29 → 2026-12-06 (+7d) | 37d → 32d |
| 3 | **Backfilling** | 2026-11-10 → 2026-11-17 (+7d) | 2026-12-02 → 2026-12-09 (+7d) |  |
| SDR-2-CON-CC-ZA-1850 | 35m Meters pole Backfilling | 2026-11-10 → 2026-11-17 (+7d) | 2026-12-02 → 2026-12-09 (+7d) | 37d → 32d |
| 4 | **Install pole** | 2026-12-14 → 2026-12-21 (+7d) | 2027-01-04 → 2027-01-11 (+7d) |  |
| SDR-2-CON-CC-ZA-1860 | 35 Meters pole Installation | 2026-12-14 → 2026-12-21 (+7d) | 2027-01-04 → 2027-01-11 (+7d) | 37d → 32d |
| 5 | **Control Room** | 2026-11-07 → 2026-11-14 (+7d) | 2027-01-04 → 2027-01-11 (+7d) |  |
| SDR-2-CON-CC-ZG-1500 | Existing Control Room Preparation to accomodate the new equipments | 2026-11-07 → 2026-11-14 (+7d) | 2026-11-10 → 2026-11-17 (+7d) | 18d → 12d |
| SDR-2-CON-CC-ZG-1540 | Workstation | 2026-11-07 → 2026-11-14 (+7d) | 2026-11-19 → 2026-11-26 (+7d) | 17d → 11d |
| SDR-2-CON-CC-ZG-1550 | Professional LED screen 32 inch for workstations | 2026-11-07 → 2026-11-14 (+7d) | 2026-11-10 → 2026-11-17 (+7d) | 17d → 11d |
| SDR-2-CON-CC-ZG-1510 | VMS Server | 2026-11-11 → 2026-11-18 (+7d) | 2026-11-16 → 2026-11-23 (+7d) | 18d → 12d |
| SDR-2-CON-CC-ZG-1560 | Professional 55" video wall cube | 2026-11-11 → 2026-11-18 (+7d) | 2026-11-15 → 2026-11-22 (+7d) | 17d → 11d |
| SDR-2-CON-CC-ZG-1570 | Industrial Rack-Mount Managed Modular Gigabit Ethernet PoE Switch (24-Port) for outdoor application | 2026-11-14 → 2026-11-21 (+7d) | 2026-11-23 → 2026-11-30 (+7d) | 17d → 11d |
| SDR-2-CON-CC-ZG-1580 | SFP 1000Base-X SM | 2026-11-14 → 2026-11-21 (+7d) | 2026-11-17 → 2026-11-24 (+7d) | 17d → 11d |
| SDR-2-CON-CC-ZG-1520 | Surveillance-optimized server for recording CCTV support simultaneous cameras stream and recording at high resolution | 2026-11-17 → 2026-11-24 (+7d) | 2026-11-21 → 2026-11-28 (+7d) | 18d → 12d |
| SDR-2-CON-CC-ZG-1590 | Professional joystick for accurate control of PTZ and PT Thermal Cameras. | 2026-11-18 → 2026-11-25 (+7d) | 2026-11-22 → 2026-11-29 (+7d) | 17d → 11d |
| SDR-2-CON-CC-ZG-1530 | Video analytic computing hardware | 2026-11-22 → 2026-11-29 (+7d) | 2026-11-25 → 2026-12-02 (+7d) | 24d → 22d |
| SDR-2-CON-CC-ZG-1600 | Fiber patch panel including all related accessories | 2026-11-23 → 2026-11-30 (+7d) | 2026-11-26 → 2026-12-03 (+7d) | 17d → 11d |
| SDR-2-CON-CC-ZG-1610 | UPS 5000VA to power for all servers, monitor, and switch in the cabinet | 2026-11-29 → 2026-12-06 (+7d) | 2026-12-05 → 2026-12-12 (+7d) | 17d → 11d |
| SDR-2-CON-CC-ZG-1620 | Outdoor Carrier Class Shielded Ethernet Cable for P-to-P access points 305 meter | 2026-12-31 → 2027-01-07 (+7d) | 2027-01-04 → 2027-01-11 (+7d) | 39d → 33d |
| 6 | **Licenses,Documentation,Testing and Training** | 2026-11-26 → 2026-12-03 (+7d) | 2027-04-14 → 2027-04-21 (+7d) |  |
| SDR-2-CON-CC-ZG-1630 | VMS Lifetime Licenses | 2026-11-26 → 2026-12-03 (+7d) | 2026-11-28 → 2026-12-05 (+7d) | 24d → 22d |
| SDR-2-CON-CC-ZG-1640 | Camera-Interlink License | 2026-11-29 → 2026-12-06 (+7d) | 2026-11-29 → 2026-12-06 (+7d) | 24d → 22d |
| SDR-2-CON-CC-ZG-1650 | Video analytics license package | 2026-11-29 → 2026-12-06 (+7d) | 2026-11-29 → 2026-12-06 (+7d) | 24d → 22d |

| ID | Task | Start | Finish | Total float | Predecessors |
| --- | --- | --- | --- | --- | --- |
| SDR-2-CON-CC-ZG-1660 | Video analytics license for ANPR | 2027-04-14 → 2027-04-21 (+7d) | 2027-04-14 → 2027-04-21 (+7d) | 7d → 1d |  |
| TC | **Testing & Commissioning** | 2027-02-11 → 2027-02-18 (+7d) | 2027-06-26 → 2027-07-03 (+7d) |  |  |
| 1 | **Civil Works** | 2027-05-01 → 2027-05-08 (+7d) | 2027-05-04 → 2027-05-11 (+7d) |  |  |
| SDR-2-TC-CW-1010 | Testing & Commissioning of road works | 2027-05-01 → 2027-05-08 (+7d) | 2027-05-04 → 2027-05-11 (+7d) | 17d → 11d |  |
| 2 | **Storm Water Drainage Network** | 2027-02-23 → 2027-03-02 (+7d) | 2027-03-08 → 2027-03-20 (+12d) |  |  |
| SDR-2-TC-SWDN-1020 | Testing & Commissioning of network work | 2027-02-23 → 2027-03-02 (+7d) | 2027-03-08 → 2027-03-20 (+12d) | 75d → 69d |  |
| 3 | **Sewerage Network** | 2027-05-02 → 2027-05-09 (+7d) | 2027-05-15 → 2027-05-27 (+12d) |  |  |
| SDR-2-TC-SN-1030 | Testing & Commissioning of Sewage Network | 2027-05-02 → 2027-05-09 (+7d) | 2027-05-15 → 2027-05-27 (+12d) | 26d → 20d |  |
| 4 | **TSE Network** | 2027-06-12 → 2027-06-19 (+7d) | 2027-06-26 → 2027-07-03 (+7d) |  |  |
| SDR-2-TC-TSE-1040 | Testing & Commissioning of TSE Network | 2027-06-12 → 2027-06-19 (+7d) | 2027-06-26 → 2027-07-03 (+7d) | 8d → 2d |  |
| 5 | **Portable Water** | 2027-06-05 → 2027-06-15 (+10d) | 2027-06-14 → 2027-06-24 (+10d) |  |  |
| SDR-2-TC-PW-1050 | Testing & Commissioning of Potable Network | 2027-06-05 → 2027-06-15 (+10d) | 2027-06-14 → 2027-06-24 (+10d) | 0d → 5d | SDR-2-CON-PW-ZA-2650, SDR-2-CON-PW-ZA-1070 SS+2d, SDR-2-CON-PW-ZA-2320, SDR-2-CON-PW-ZA-2620, SDR-2-CON-PW-ZA-3200, SDR-2-CON-PW-ZA-3100, SDR-2-CON-PW-ZA-3000, SDR-2-CON-PW-ZA-3700, SDR-2-CON-PW-ZA-2520, SDR-2-CON-PW-ZA-2420, SDR-2-CON-PW-ZA-2900, SDR-2-CON-PW-ZA-3650, SDR-2-CON-PW-ZA-3550, SDR-2-CON-PW-ZA-3450, SDR-2-CON-PW-ZA-3350, SDR-2-CON-PW-ZA-3250, SDR-2-CON-PW-ZA-2800, SDR-2-CON-PW-ZA-2700, SDR-2-CON-PW-ZA-1070 → SDR-2-CON-PW-ZA-2650, SDR-2-CON-PW-ZA-1070 SS, SDR-2-CON-PW-ZA-2320, SDR-2-CON-PW-ZA-2620, SDR-2-CON-PW-ZA-3200, SDR-2-CON-PW-ZA-3100, SDR-2-CON-PW-ZA-3000, SDR-2-CON-PW-ZA-3700, SDR-2-CON-PW-ZA-2520, SDR-2-CON-PW-ZA-2420, SDR-2-CON-PW-ZA-2900, SDR-2-CON-PW-ZA-3650, SDR-2-CON-PW-ZA-3550, SDR-2-CON-PW-ZA-3450, SDR-2-CON-PW-ZA-3350, SDR-2-CON-PW-ZA-3250, SDR-2-CON-PW-ZA-2800, SDR-2-CON-PW-ZA-2700, SDR-2-CON-PW-ZA-1070, SDR-2-CON-PW-ZA-2750, SDR-2-CON-PW-ZA-2250, SDR-2-CON-PW-ZA-3300, SDR-2-CON-PW-ZA-2550 |
| 6 | **Electrical Works** | 2027-04-15 → 2027-04-22 (+7d) | 2027-04-22 → 2027-04-29 (+7d) |  |  |
| SDR-2-TC-EW-1060 | Testing & Commissioning of Electrical Network | 2027-04-15 → 2027-04-22 (+7d) | 2027-04-22 → 2027-04-29 (+7d) | 14d → 8d |  |
| 7 | **Landscape & Irrigation Works** | 2027-06-05 → 2027-06-15 (+10d) | 2027-06-10 → 2027-06-21 (+11d) |  |  |
| SDR-2-TC-LIW-1070 | Testing & Commissioning of Landscape & Irrigation Network | 2027-06-05 → 2027-06-15 (+10d) | 2027-06-10 → 2027-06-21 (+11d) | 21d → 12d |  |
| 8 | **CCTV Works** | 2027-02-11 → 2027-02-18 (+7d) | 2027-02-23 → 2027-03-02 (+7d) |  |  |
| SDR-2-TC-CCTV-1080 | Testing & Commissioning of medium voltage works | 2027-02-11 → 2027-02-18 (+7d) | 2027-02-23 → 2027-03-02 (+7d) | 5d → 0d |  |
| CO | **Close Out** | 2027-04-15 → 2027-04-22 (+7d) | 2027-07-05 → 2027-07-04 (-1d) |  |  |
| 1 | **As Built Drawings** | 2027-04-15 → 2027-04-22 (+7d) | 2027-06-17 → 2027-06-05 (-12d) |  |  |
| 1 | **Civil** | 2027-04-15 → 2027-04-22 (+7d) | 2027-04-28 → 2027-05-05 (+7d) |  |  |
| SDR-2-CLO-AS-C-1000 | Civil As-Built Drawing Submission | 2027-04-15 → 2027-04-22 (+7d) | 2027-04-22 → 2027-04-29 (+7d) | 7d → 1d |  |
| SDR-2-CLO-AS-C-1010 | Civil As-Built Drawing Approvals | 2027-04-24 → 2027-05-01 (+7d) | 2027-04-28 → 2027-05-05 (+7d) | 7d → 1d |  |
| 2 | **Mechanical** | 2027-05-31 → 2027-05-12 (-19d) | 2027-06-17 → 2027-06-05 (-12d) |  |  |
| SDR-2-CLO-AS-M-1000 | Mechanical As-Built Drawing Submission | 2027-05-31 → 2027-05-12 (-19d) | 2027-06-08 → 2027-05-26 (-13d) | 1d → 12d |  |
| SDR-2-CLO-AS-M-1010 | Mechanical As-Built Drawing Approvals | 2027-06-09 → 2027-05-27 (-13d) | 2027-06-17 → 2027-06-05 (-12d) | 1d → 12d |  |
| 3 | **Electrical** | 2027-04-15 → 2027-04-22 (+7d) | 2027-05-01 → 2027-05-08 (+7d) |  |  |
| SDR-2-CLO-AS-E-1000 | Electrical As-Built Drawing Submission | 2027-04-15 → 2027-04-22 (+7d) | 2027-04-22 → 2027-04-29 (+7d) | 21d → 15d |  |
| SDR-2-CLO-AS-E-1010 | Electrical As-Built Drawing Approvals | 2027-04-24 → 2027-05-01 (+7d) | 2027-05-01 → 2027-05-08 (+7d) | 21d → 15d |  |
| 2 | **Training and Manuals** | 2027-06-19 → 2027-06-09 (-10d) | 2027-07-04 → 2027-06-24 (-10d) |  |  |
| SDR-2-CLO-TM-1000 | Training and Manuals | 2027-06-19 → 2027-06-09 (-10d) | 2027-07-04 → 2027-06-24 (-10d) | 1d → 9d |  |
| 3 | **Demobilize Manpower** | 2027-06-19 → 2027-06-09 (-10d) | 2027-07-04 → 2027-06-24 (-10d) |  |  |
| SDR-2-CLO-DM-1000 | Manpower Demobilize | 2027-06-19 → 2027-06-09 (-10d) | 2027-07-04 → 2027-06-24 (-10d) | 1d → 9d |  |
| 4 | **Demobilize Equipment** | 2027-06-19 → 2027-06-09 (-10d) | 2027-07-04 → 2027-06-24 (-10d) |  |  |
| SDR-2-CLO-DE-1000 | Equipments Demobilize | 2027-06-19 → 2027-06-09 (-10d) | 2027-07-04 → 2027-06-24 (-10d) | 1d → 9d |  |
| 5 | **Removal of Site Offices and Structures** | 2027-06-19 → 2027-06-09 (-10d) | 2027-07-04 → 2027-06-24 (-10d) |  |  |
| SDR-2-CLO-RO-1000 | Site Office Removal | 2027-06-19 → 2027-06-09 (-10d) | 2027-07-04 → 2027-06-24 (-10d) | 1d → 9d |  |
| 6 | **Handover** | 2027-06-30 → 2027-06-28 (-2d) | 2027-07-05 → 2027-07-04 (-1d) |  |  |
| SDR-2-CLO-HO-1000 | Project Handover | 2027-06-30 → 2027-06-28 (-2d) | 2027-07-05 → 2027-07-04 (-1d) | 0d → 1.7d | SDR-2-ENG-APP-M-1010, SDR-2-PREL-1100, SDR-2-CON-SE-ZA-1610, SDR-2-CON-IR-ZA-2980 FF, SDR-2-TC-LIW-1070 FF, SDR-2-CLO-DE-1000 SS, SDR-2-CLO-RO-1000 SS, SDR-2-CON-RW-ZA-1150, SDR-2-CON-RW-ZA-1290, SDR-2-CON-ST-ZA-3310, SDR-2-CON-TS-ZA-1080, SDR-2-CON-TS-ZA-1260, SDR-2-CON-TS-ZA-1710, SDR-2-CON-TS-ZA-1800, SDR-2-CON-TE-ZA-1020, SDR-2-CON-TE-ZA-1060, SDR-2-CON-LS-ZA-1060 SS, SDR-2-CON-CC-ZA-1620, SDR-2-CON-CC-ZA-1660, SDR-2-CON-CC-ZG-1660, SDR-2-TC-CCTV-1080, SDR-2-CON-LS-ZG-1060 SS, SDR-2-CON-PW-ZA-1080, SDR-2-PRO-MAS-C-1100, SDR-2-PRO-MAL-M-1060, SDR-2-PRO-MAL-M-1070, SDR-2-CON-SL-ZA-2690 SS, SDR-2-PRO-MAS-E-1000, SDR-2-PRO-MAL-E-1030, SDR-2-PRO-MAL-E-1130, SDR-2-PRO-MAL-E-1120, SDR-2-CON-CC-ZA-1110 SS, SDR-2-PRO-MAL-E-1170, SDR-2-CON-CC-ZA-1270, SDR-2-CON-CC-ZA-1410 SS, SDR-2-CON-IR-ZA-1030 FF, SDR-2-PRO-MAS-E-1020, SDR-2-CON-SL-ZA-1110, SDR-2-PRO-MAS-C-1080, SDR-2-CON-MV-ZA-1150, SDR-2-PRO-MAL-M-1030, SDR-2-PRO-MAL-M-1040, SDR-2-PRO-MAL-E-1010, SDR-2-PRO-MAL-E-1020, SDR-2-PRO-MAL-E-1180, SDR-2-PRO-MAL-E-1060, SDR-2-CON-RW-ZA-1050, SDR-2-CON-RW-ZA-1200, SDR-2-CON-RW-ZA-1340, SDR-2-CON-RW-ZA-1430, SDR-2-CON-RW-ZA-1480, SDR-2-CON-RW-ZA-1570, SDR-2-CON-RW-ZA-1620, SDR-2-CON-RW-ZA-1710, SDR-2-CON-RW-ZA-1760, SDR-2-CON-RW-ZA-1850, SDR-2-CON-RW-ZA-1900, SDR-2-CON-RW-ZA-1990, SDR-2-CON-RW-ZA-3190, SDR-2-CON-RW-ZA-2130, SDR-2-CON-RW-ZA-2180, SDR-2-CON-RW-ZA-2270, SDR-2-CON-RW-ZA-2320, SDR-2-CON-RW-ZA-2410, SDR-2-CON-RW-ZA-2460, SDR-2-CON-RW-ZA-2550, SDR-2-CON-RW-ZA-2600, SDR-2-CON-RW-ZA-2690, SDR-2-CON-RW-ZA-2740, SDR-2-CON-RW-ZA-2830, SDR-2-CON-RW-ZG-1060, SDR-2-CON-RW-ZG-1210, SDR-2-CON-RW-ZG-1310, SDR-2-CON-RW-ZG-1360, SDR-2-CON-RW-ZG-1460, SDR-2-CON-RW-ZG-1510, SDR-2-CON-RW-ZG-1610, SDR-2-CON-RW-ZG-1660, SDR-2-CON-RW-ZG-1760, SDR-2-CON-RW-ZG-1810, SDR-2-CON-RW-ZG-1910, SDR-2-CON-RW-ZG-1960, SDR-2-CON-RW-ZG-2060, SDR-2-CON-RW-ZG-2110, SDR-2-CON-RW-ZG-2210, SDR-2-CON-ST-ZA-3760, SDR-2-CON-ST-ZA-4130, SDR-2-CON-ST-ZA-4280, SDR-2-CON-ST-ZA-4430, SDR-2-CON-ST-ZA-4580, SDR-2-CON-ST-ZA-4730, SDR-2-CON-ST-ZA-4880, SDR-2-CON-ST-ZA-5030, SDR-2-CON-ST-ZA-5070, SDR-2-CON-ST-ZA-5180, SDR-2-CON-ST-ZA-5220, SDR-2-CON-ST-ZA-5930, SDR-2-CON-ST-ZA-5970, SDR-2-CON-ST-ZA-5480, SDR-2-CON-ST-ZA-5630, SDR-2-CON-ST-ZA-6000, SDR-2-CON-ST-ZA-6080, SDR-2-CON-SE-ZA-1440, SDR-2-CON-SE-ZA-1540, SDR-2-CON-SE-ZA-1740, SDR-2-CON-SE-ZA-1840, SDR-2-CON-SE-ZA-1940, SDR-2-CON-SE-ZA-2040, SDR-2-CON-SE-ZA-2140, SDR-2-CON-SE-ZA-2240, SDR-2-CON-SE-ZA-2340, SDR-2-CON-SE-ZA-2440, SDR-2-CON-TS-ZA-1910, SDR-2-CON-TS-ZA-1070, SDR-2-CON-TS-ZA-2260, SDR-2-CON-TS-ZA-2040, SDR-2-CON-TS-ZA-2090, SDR-2-CON-TS-ZA-2690, SDR-2-CON-TS-ZA-2890, SDR-2-CON-TS-ZA-1960, SDR-2-CON-TS-ZA-1970, SDR-2-CON-TS-ZA-2140, SDR-2-CON-TS-ZA-1980, SDR-2-CON-TS-ZA-2190, SDR-2-CON-TS-ZA-3190, SDR-2-CON-TS-ZA-2360, SDR-2-CON-TS-ZA-2490, SDR-2-CON-TS-ZA-2990, SDR-2-CON-TS-ZA-3090, SDR-2-CON-TS-ZA-2590, SDR-2-CON-PW-ZA-2320, SDR-2-CON-PW-ZA-2700, SDR-2-CON-PW-ZA-2800, SDR-2-CON-PW-ZA-3250, SDR-2-CON-PW-ZA-3350, SDR-2-CON-PW-ZA-3450, SDR-2-CON-PW-ZA-3550, SDR-2-CON-PW-ZA-3650, SDR-2-CON-PW-ZA-2900, SDR-2-CON-PW-ZA-2420, SDR-2-CON-PW-ZA-2520, SDR-2-CON-PW-ZA-3700, SDR-2-CON-PW-ZA-3000, SDR-2-CON-PW-ZA-3100, SDR-2-CON-PW-ZA-3200, SDR-2-CON-PW-ZA-2620, SDR-2-CON-SL-ZA-1100, SDR-2-CON-SL-ZA-2890, SDR-2-CON-SL-ZA-1400, SDR-2-CON-SL-ZA-2970, SDR-2-CON-SL-ZA-3010, SDR-2-CON-SL-ZA-3050, SDR-2-CON-SL-ZA-3090, SDR-2-CON-SL-ZA-3130, SDR-2-CON-SL-ZA-3170, SDR-2-CON-SL-ZA-3210, SDR-2-CON-SL-ZA-2930, SDR-2-CON-SL-ZA-2780, SDR-2-CON-SL-ZA-2800, SDR-2-CON-SL-ZA-2820, SDR-2-CON-SL-ZA-2840, SDR-2-CON-SL-ZA-2860, SDR-2-CON-MV-ZA-1100, SDR-2-CON-MV-ZA-1180, SDR-2-CON-MV-ZA-1220, SDR-2-CON-MV-ZA-1260, SDR-2-CON-TE-ZA-1840, SDR-2-CON-TE-ZA-3280, SDR-2-CON-TE-ZA-3270, SDR-2-CON-TE-ZA-3370, SDR-2-CON-TE-ZA-3360, SDR-2-CON-TE-ZA-3460, SDR-2-CON-TE-ZA-3450, SDR-2-CON-TE-ZA-3550, SDR-2-CON-TE-ZA-3540, SDR-2-CON-TE-ZA-3640, SDR-2-CON-TE-ZA-3630, SDR-2-CON-TE-ZA-3730, SDR-2-CON-TE-ZA-3720, SDR-2-CON-TE-ZA-3820, SDR-2-CON-TE-ZA-3810, SDR-2-CON-TE-ZA-3910, SDR-2-CON-TE-ZA-3900, SDR-2-CON-TE-ZA-4000, SDR-2-CON-TE-ZA-3990, SDR-2-CON-TE-ZA-4090, SDR-2-CON-TE-ZA-4080, SDR-2-CON-TE-ZA-4180, SDR-2-CON-TE-ZA-4170, SDR-2-CON-SL-ZA-3250, SDR-2-CON-SL-ZA-3290, SDR-2-CON-SL-ZA-3330, SDR-2-CON-SL-ZA-3370, SDR-2-CON-SL-ZA-3410, SDR-2-CON-SL-ZA-3460, SDR-2-CON-SL-ZA-3490, SDR-2-CON-SL-ZA-3520, SDR-2-CON-SL-ZA-3550, SDR-2-CON-SL-ZA-3580, SDR-2-CON-MV-ZA-1300, SDR-2-CON-MV-ZA-1340, SDR-2-CON-TE-ZA-4270, SDR-2-CON-TE-ZA-4260, SDR-2-CON-TE-ZA-4360, SDR-2-CON-TE-ZA-4350, SDR-2-CON-TE-ZA-4450, SDR-2-CON-TE-ZA-4440, SDR-2-CON-TE-ZA-4540, SDR-2-CON-TE-ZA-4530, SDR-2-CON-IR-ZA-2150 FF, SDR-2-CON-IR-ZA-2190 SS+1d → SDR-2-ENG-APP-M-1010, SDR-2-PREL-1100, SDR-2-CON-SE-ZA-1610, SDR-2-CON-IR-ZA-2980 FF, SDR-2-TC-LIW-1070 FF, SDR-2-CLO-DE-1000 SS, SDR-2-CLO-RO-1000 SS, SDR-2-CON-RW-ZA-1150, SDR-2-CON-RW-ZA-1290, SDR-2-CON-ST-ZA-3310, SDR-2-CON-TS-ZA-1080, SDR-2-CON-TS-ZA-1260, SDR-2-CON-TS-ZA-1710, SDR-2-CON-TS-ZA-1800, SDR-2-CON-TE-ZA-1020, SDR-2-CON-TE-ZA-1060, SDR-2-CON-LS-ZA-1060 SS, SDR-2-CON-CC-ZA-1620, SDR-2-CON-CC-ZA-1660, SDR-2-CON-CC-ZG-1660, SDR-2-TC-CCTV-1080, SDR-2-CON-LS-ZG-1060 SS, SDR-2-CON-PW-ZA-1080, SDR-2-PRO-MAS-C-1100, SDR-2-PRO-MAL-M-1060, SDR-2-PRO-MAL-M-1070, SDR-2-CON-SL-ZA-2690 SS, SDR-2-PRO-MAS-E-1000, SDR-2-PRO-MAL-E-1030, SDR-2-PRO-MAL-E-1130, SDR-2-PRO-MAL-E-1120, SDR-2-CON-CC-ZA-1110 SS, SDR-2-PRO-MAL-E-1170, SDR-2-CON-CC-ZA-1270, SDR-2-CON-CC-ZA-1410 SS, SDR-2-CON-IR-ZA-1030 FF, SDR-2-PRO-MAS-E-1020, SDR-2-CON-SL-ZA-1110, SDR-2-PRO-MAS-C-1080, SDR-2-CON-MV-ZA-1150, SDR-2-PRO-MAL-M-1030, SDR-2-PRO-MAL-M-1040, SDR-2-PRO-MAL-E-1010, SDR-2-PRO-MAL-E-1020, SDR-2-PRO-MAL-E-1180, SDR-2-PRO-MAL-E-1060, SDR-2-CON-RW-ZA-1050, SDR-2-CON-RW-ZA-1200, SDR-2-CON-RW-ZA-1340, SDR-2-CON-RW-ZA-1430, SDR-2-CON-RW-ZA-1480, SDR-2-CON-RW-ZA-1570, SDR-2-CON-RW-ZA-1620, SDR-2-CON-RW-ZA-1710, SDR-2-CON-RW-ZA-1760, SDR-2-CON-RW-ZA-1850, SDR-2-CON-RW-ZA-1900, SDR-2-CON-RW-ZA-1990, SDR-2-CON-RW-ZA-2040, SDR-2-CON-RW-ZA-2130, SDR-2-CON-RW-ZA-2180, SDR-2-CON-RW-ZA-2270, SDR-2-CON-RW-ZA-2320, SDR-2-CON-RW-ZA-2410, SDR-2-CON-RW-ZA-2460, SDR-2-CON-RW-ZA-2550, SDR-2-CON-RW-ZA-2600, SDR-2-CON-RW-ZA-2690, SDR-2-CON-RW-ZA-2740, SDR-2-CON-RW-ZA-2830, SDR-2-CON-RW-ZG-1060, SDR-2-CON-RW-ZG-1210, SDR-2-CON-RW-ZG-1310, SDR-2-CON-RW-ZG-1360, SDR-2-CON-RW-ZG-1460, SDR-2-CON-RW-ZG-1510, SDR-2-CON-RW-ZG-1610, SDR-2-CON-RW-ZG-1660, SDR-2-CON-RW-ZG-1760, SDR-2-CON-RW-ZG-1810, SDR-2-CON-RW-ZG-1910, SDR-2-CON-RW-ZG-1960, SDR-2-CON-RW-ZG-2060, SDR-2-CON-RW-ZG-2110, SDR-2-CON-RW-ZG-2210, SDR-2-CON-ST-ZA-3760, SDR-2-CON-ST-ZA-4130, SDR-2-CON-ST-ZA-4280, SDR-2-CON-ST-ZA-4430, SDR-2-CON-ST-ZA-4580, SDR-2-CON-ST-ZA-4730, SDR-2-CON-ST-ZA-4880, SDR-2-CON-ST-ZA-5030, SDR-2-CON-ST-ZA-5070, SDR-2-CON-ST-ZA-5180, SDR-2-CON-ST-ZA-5220, SDR-2-CON-ST-ZA-5930, SDR-2-CON-ST-ZA-5970, SDR-2-CON-ST-ZA-5480, SDR-2-CON-ST-ZA-5630, SDR-2-CON-ST-ZA-6000, SDR-2-CON-ST-ZA-6080, SDR-2-CON-SE-ZA-1440, SDR-2-CON-SE-ZA-1540, SDR-2-CON-SE-ZA-1740, SDR-2-CON-SE-ZA-1840, SDR-2-CON-SE-ZA-1940, SDR-2-CON-SE-ZA-2040, SDR-2-CON-SE-ZA-2140, SDR-2-CON-SE-ZA-2240, SDR-2-CON-SE-ZA-2340, SDR-2-CON-SE-ZA-2440, SDR-2-CON-TS-ZA-1910, SDR-2-CON-TS-ZA-1070, SDR-2-CON-TS-ZA-2260, SDR-2-CON-TS-ZA-2040, SDR-2-CON-TS-ZA-2090, SDR-2-CON-TS-ZA-2690, SDR-2-CON-TS-ZA-2890, SDR-2-CON-TS-ZA-1960, SDR-2-CON-TS-ZA-1970, SDR-2-CON-TS-ZA-2140, SDR-2-CON-TS-ZA-1980, SDR-2-CON-TS-ZA-2190, SDR-2-CON-TS-ZA-3190, SDR-2-CON-TS-ZA-2360, SDR-2-CON-TS-ZA-2490, SDR-2-CON-TS-ZA-2990, SDR-2-CON-TS-ZA-3090, SDR-2-CON-TS-ZA-2590, SDR-2-CON-PW-ZA-2320, SDR-2-CON-PW-ZA-2700, SDR-2-CON-PW-ZA-2800, SDR-2-CON-PW-ZA-3250, SDR-2-CON-PW-ZA-3350, SDR-2-CON-PW-ZA-3450, SDR-2-CON-PW-ZA-3550, SDR-2-CON-PW-ZA-3650, SDR-2-CON-PW-ZA-2900, SDR-2-CON-PW-ZA-2420, SDR-2-CON-PW-ZA-2520, SDR-2-CON-PW-ZA-3700, SDR-2-CON-PW-ZA-3000, SDR-2-CON-PW-ZA-3100, SDR-2-CON-PW-ZA-3200, SDR-2-CON-PW-ZA-2620, SDR-2-CON-SL-ZA-1100, SDR-2-CON-SL-ZA-2890, SDR-2-CON-SL-ZA-1400, SDR-2-CON-SL-ZA-2970, SDR-2-CON-SL-ZA-3010, SDR-2-CON-SL-ZA-3050, SDR-2-CON-SL-ZA-3090, SDR-2-CON-SL-ZA-3130, SDR-2-CON-SL-ZA-3170, SDR-2-CON-SL-ZA-3210, SDR-2-CON-SL-ZA-2930, SDR-2-CON-SL-ZA-2780, SDR-2-CON-SL-ZA-2800, SDR-2-CON-SL-ZA-2820, SDR-2-CON-SL-ZA-2840, SDR-2-CON-SL-ZA-2860, SDR-2-CON-MV-ZA-1100, SDR-2-CON-MV-ZA-1180, SDR-2-CON-MV-ZA-1220, SDR-2-CON-MV-ZA-1260, SDR-2-CON-TE-ZA-1840, SDR-2-CON-TE-ZA-3280, SDR-2-CON-TE-ZA-3270, SDR-2-CON-TE-ZA-3370, SDR-2-CON-TE-ZA-3360, SDR-2-CON-TE-ZA-3460, SDR-2-CON-TE-ZA-3450, SDR-2-CON-TE-ZA-3550, SDR-2-CON-TE-ZA-3540, SDR-2-CON-TE-ZA-3640, SDR-2-CON-TE-ZA-3630, SDR-2-CON-TE-ZA-3730, SDR-2-CON-TE-ZA-3720, SDR-2-CON-TE-ZA-3820, SDR-2-CON-TE-ZA-3810, SDR-2-CON-TE-ZA-3910, SDR-2-CON-TE-ZA-3900, SDR-2-CON-TE-ZA-4000, SDR-2-CON-TE-ZA-3990, SDR-2-CON-TE-ZA-4090, SDR-2-CON-TE-ZA-4080, SDR-2-CON-TE-ZA-4180, SDR-2-CON-TE-ZA-4170, SDR-2-CON-SL-ZA-3250, SDR-2-CON-SL-ZA-3290, SDR-2-CON-SL-ZA-3330, SDR-2-CON-SL-ZA-3370, SDR-2-CON-SL-ZA-3410, SDR-2-CON-SL-ZA-3460, SDR-2-CON-SL-ZA-3490, SDR-2-CON-SL-ZA-3520, SDR-2-CON-SL-ZA-3550, SDR-2-CON-SL-ZA-3580, SDR-2-CON-MV-ZA-1300, SDR-2-CON-MV-ZA-1340, SDR-2-CON-TE-ZA-4270, SDR-2-CON-TE-ZA-4260, SDR-2-CON-TE-ZA-4360, SDR-2-CON-TE-ZA-4350, SDR-2-CON-TE-ZA-4450, SDR-2-CON-TE-ZA-4440, SDR-2-CON-TE-ZA-4540, SDR-2-CON-TE-ZA-4530, SDR-2-CON-IR-ZA-2150 FF, SDR-2-CON-IR-ZA-2190 SS+1d |
