# CON-LEG101: Infrastructure Development For Industrial City 1 In Jeddah - JDH1-02-003

How a schedule from Primavera P6 changed from version to version. A marks actual dates.

## Version 1 (data date 2025-11-19, saved 2025-12-16, file 01. JDH1-02-003 -ENJ-Baseline Schedule.xer)

| ID | WBS | Task | Duration | Start | Finish | Predecessors | Total float |
| --- | --- | --- | --- | --- | --- | --- | --- |
|  | 5 | **Milestones** |  | 2025-11-19 | 2027-11-18 |  |  |
|  | 1 | **Key Milestones** |  | 2025-11-19 | 2027-11-18 |  |  |
| CON-LEG101-MS-1090 |  | Project Commencement Date | 0d | 2025-11-19 | 2025-11-19 |  | 0d |
| CON-LEG101-MS-1000 |  | Project Completion Date | 0d | 2027-11-18 | 2027-11-18 | CON-LEG101-MS-1080, CON-LEG101-MS-1060, CON-LEG101-MS-1120, CON-LEG101-MS-1130, CON-LEG101-MS-1140, CON-LEG101-MS-1150, CON-LEG101-MS-1100, CON-LEG101-MS-1010, CON-LEG101-MS-1040, CON-LEG101-MS-1030, CON-LEG101-MS-1020, CON-LEG101-MS-1050, CON-LEG101-DM-1000, CON-LEG101-DM-1010, CON-LEG101-DM-1020, CON-LEG101-DM-1030, CON-LEG101-DM-1040 | 0d |
|  | 2 | **Contractual Milestone** |  | 2025-12-18 | 2027-11-18 |  |  |
|  | 2 | **Mobilization** |  | 2025-12-18 | 2025-12-18 |  |  |
| CON-LEG101-MS-1070 |  | Finish Mobilization | 0d | 2025-12-18 | 2025-12-18 | CON-LEG101-MB-1020, CON-LEG101-PS-1100, CON-LEG101-PS-1110, CON-LEG101-PS-1120, CON-LEG101-PS-1130, CON-LEG101-PS-1140, CON-LEG101-PS-1150, CON-LEG101-PS-1160, CON-LEG101-PS-1170, CON-LEG101-MB-1160, CON-LEG101-MB-1110, CON-LEG101-MB-1120, CON-LEG101-MB-1000, CON-LEG101-MB-1340, CON-LEG101-MB-1270, CON-LEG101-MB-1260, CON-LEG101-MB-1250, CON-LEG101-MB-1130, CON-LEG101-MB-1150, CON-LEG101-TP-1330, CON-LEG101-PA-1000, CON-LEG101-PA-1010, CON-LEG101-PA-1020, CON-LEG101-PA-1030, CON-LEG101-PA-1040 | 0d |
|  | 3 | **Time Schedule** |  | 2025-12-18 | 2025-12-18 |  |  |
| CON-LEG101-MS-1080 |  | Finish Baseline Time Schedule | 0d | 2025-12-18 | 2025-12-18 | CON-LEG101-PS-1000, CON-LEG101-PS-1090 | 12d |
|  | 4 | **Engineering** |  | 2026-01-19 | 2026-01-19 |  |  |
| CON-LEG101-MS-1060 |  | Finish Submission and Approval for Shop Drawings, Method of Statement, Prequalification and Materials | 0d | 2026-01-19 | 2026-01-19 | CON-LEG101-EN-1780, CON-LEG101-EN-1790, CON-LEG101-EN-1800, CON-LEG101-EN-1750, CON-LEG101-EN-1760, CON-LEG101-EN-1770, CON-LEG101-EN-1720, CON-LEG101-EN-1730, CON-LEG101-EN-1740, CON-LEG101-EN-1690, CON-LEG101-EN-1700, CON-LEG101-EN-1710, CON-LEG101-EN-1660, CON-LEG101-EN-1670, CON-LEG101-EN-1680, CON-LEG101-EN-3280, CON-LEG101-EN-3290, CON-LEG101-EN-3300, CON-LEG101-EN-3310, CON-LEG101-EN-3320, CON-LEG101-EN-3330, CON-LEG101-EN-3360, CON-LEG101-EN-1570, CON-LEG101-EN-1580, CON-LEG101-EN-1590, CON-LEG101-EN-1600, CON-LEG101-EN-1610, CON-LEG101-EN-1150, CON-LEG101-EN-1160, CON-LEG101-EN-1170, CON-LEG101-EN-1190, CON-LEG101-EN-1200, CON-LEG101-EN-1210, CON-LEG101-EN-1230, CON-LEG101-EN-1220, CON-LEG101-EN-3340, CON-LEG101-EN-3350, CON-LEG101-EN-3370, CON-LEG101-EN-3380, CON-LEG101-EN-3390, CON-LEG101-EN-3400, CON-LEG101-EN-3410, CON-LEG101-EN-3420, CON-LEG101-EN-3430, CON-LEG101-EN-3440, CON-LEG101-EN-3450, CON-LEG101-EN-3460, CON-LEG101-EN-3490, CON-LEG101-EN-3500, CON-LEG101-EN-3510, CON-LEG101-EN-3520, CON-LEG101-EN-3530, CON-LEG101-EN-3560, CON-LEG101-EN-3590, CON-LEG101-EN-3540, CON-LEG101-EN-3550, CON-LEG101-EN-3470, CON-LEG101-EN-3570, CON-LEG101-EN-3580, CON-LEG101-EN-3480, CON-LEG101-SB-4270, CON-LEG101-SB-4290, CON-LEG101-SB-4310, CON-LEG101-SB-1030, CON-LEG101-SB-1070, CON-LEG101-SB-1110, CON-LEG101-SB-1150, CON-LEG101-SB-1190, CON-LEG101-SB-2370, CON-LEG101-SB-1230, CON-LEG101-SB-1590, CON-LEG101-SB-3330, CON-LEG101-SB-1550, CON-LEG101-SB-1630, CON-LEG101-SB-1470, CON-LEG101-SB-1510, CON-LEG101-SB-1430, CON-LEG101-SB-2110, CON-LEG101-SB-2070, CON-LEG101-SB-1390, CON-LEG101-SB-2030, CON-LEG101-SB-3750, CON-LEG101-SB-3790, CON-LEG101-SB-3810, CON-LEG101-SB-3770, CON-LEG101-SB-3830, CON-LEG101-SB-3850, CON-LEG101-SB-3870, CON-LEG101-SB-3890, CON-LEG101-SB-2310, CON-LEG101-SB-2330, CON-LEG101-SB-3910, CON-LEG101-SB-3350, CON-LEG101-SB-3390, CON-LEG101-SB-3370, CON-LEG101-SB-1270, CON-LEG101-SB-1790, CON-LEG101-SB-1830, CON-LEG101-SB-1870, CON-LEG101-SB-1670, CON-LEG101-SB-1310, CON-LEG101-SB-1710, CON-LEG101-SB-1750, CON-LEG101-SB-1350, CON-LEG101-SB-2430, CON-LEG101-SB-1910, CON-LEG101-SB-1950, CON-LEG101-SB-1990, CON-LEG101-SB-3410, CON-LEG101-SB-3510, CON-LEG101-SB-3450, CON-LEG101-SB-3430, CON-LEG101-SB-3470, CON-LEG101-SB-3490, CON-LEG101-SB-3530, CON-LEG101-SB-3630, CON-LEG101-SB-3550, CON-LEG101-SB-3570, CON-LEG101-SB-3590, CON-LEG101-SB-3610, CON-LEG101-SB-3650, CON-LEG101-SB-3670, CON-LEG101-SB-3690, CON-LEG101-SB-3710, CON-LEG101-SB-3730, CON-LEG101-SB-3950, CON-LEG101-SB-3970, CON-LEG101-SB-3990, CON-LEG101-SB-4010, CON-LEG101-SB-3940, CON-LEG101-SB-4040, CON-LEG101-SB-4150, CON-LEG101-SB-4190, CON-LEG101-SB-4050, CON-LEG101-SB-4070, CON-LEG101-SB-4090, CON-LEG101-SB-4110, CON-LEG101-SB-4130, CON-LEG101-SB-4170 | 0d |
|  | 1 | **Procurement** |  | 2026-01-19 | 2026-01-19 |  |  |
| CON-LEG101-MS-1100 |  | Finish PO for Short Lead Item & Long Lead Item | 0d | 2026-01-19 | 2026-01-19 | CON-LEG101-PR-3990, CON-LEG101-PR-1550, CON-LEG101-PR-1580, CON-LEG101-PR-1610, CON-LEG101-PR-1640, CON-LEG101-PR-1670, CON-LEG101-PR-1700, CON-LEG101-PR-1730, CON-LEG101-PR-1760, CON-LEG101-PR-1790, CON-LEG101-PR-1820, CON-LEG101-PR-1850, CON-LEG101-PR-2000, CON-LEG101-PR-2030, CON-LEG101-PR-2120, CON-LEG101-PR-2150, CON-LEG101-PR-2180, CON-LEG101-PR-2210, CON-LEG101-PR-2260, CON-LEG101-PR-2300, CON-LEG101-PR-2340, CON-LEG101-PR-2370, CON-LEG101-PR-2440, CON-LEG101-PR-2480, CON-LEG101-PR-2520, CON-LEG101-PR-2580, CON-LEG101-PR-2610, CON-LEG101-PR-2640, CON-LEG101-PR-2650, CON-LEG101-PR-2660, CON-LEG101-PR-2670, CON-LEG101-PR-2800, CON-LEG101-PR-2840, CON-LEG101-PR-2850, CON-LEG101-PR-2860, CON-LEG101-PR-2870, CON-LEG101-PR-2880, CON-LEG101-PR-2890, CON-LEG101-PR-3080, CON-LEG101-PR-3120, CON-LEG101-PR-3160, CON-LEG101-PR-3190, CON-LEG101-PR-3200, CON-LEG101-PR-3270, CON-LEG101-PR-3300, CON-LEG101-PR-3310, CON-LEG101-PR-3380, CON-LEG101-PR-3420, CON-LEG101-PR-3460, CON-LEG101-PR-3500, CON-LEG101-PR-3540, CON-LEG101-PR-3580, CON-LEG101-PR-3620, CON-LEG101-PR-3660, CON-LEG101-PR-3700, CON-LEG101-PR-3740, CON-LEG101-PR-3770, CON-LEG101-PR-3800, CON-LEG101-PR-3840, CON-LEG101-PR-3880, CON-LEG101-PR-3920, CON-LEG101-PR-1000, CON-LEG101-PR-1010, CON-LEG101-PR-1020, CON-LEG101-PR-1030, CON-LEG101-PR-1040, CON-LEG101-PR-1050, CON-LEG101-PR-1060, CON-LEG101-PR-1070, CON-LEG101-PR-1240, CON-LEG101-PR-1250, CON-LEG101-PR-1260, CON-LEG101-PR-1330, CON-LEG101-PR-1360, CON-LEG101-PR-1390, CON-LEG101-PR-1420, CON-LEG101-PR-1440, CON-LEG101-PR-1470, CON-LEG101-PR-1500, CON-LEG101-PR-1520 | 18d |
|  | 5 | **Construction** |  | 2026-09-17 | 2027-11-18 |  |  |
| CON-LEG101-MS-1120 |  | Completion of Roads & Meduim Voltage | 0d | 2026-09-17 | 2026-09-17 | CON-LEG101-LR-5880, CON-LEG101-LR-7680, CON-LEG101-LR-5890, CON-LEG101-LR-7690, CON-LEG101-LR-5900, CON-LEG101-LR-7700, CON-LEG101-LR-5910, CON-LEG101-LR-7710, CON-LEG101-LR-5920, CON-LEG101-LR-7720, CON-LEG101-LR-5930, CON-LEG101-LR-7730, CON-LEG101-LR-5940, CON-LEG101-LR-7740, CON-LEG101-LR-5950, CON-LEG101-LR-7750, CON-LEG101-LR-5960, CON-LEG101-LR-7760, CON-LEG101-LR-5970 | 12d |
| CON-LEG101-MS-1130 |  | Completion of Deep infrastructure network | 0d | 2026-11-18 | 2026-11-18 | CON-LEG101-LR-4320, CON-LEG101-LR-3500, CON-LEG101-LR-4430, CON-LEG101-LR-3410, CON-LEG101-LR-4210, CON-LEG101-LR-4330, CON-LEG101-LR-11800, CON-LEG101-LR-11750, CON-LEG101-LR-4300, CON-LEG101-LR-3570, CON-LEG101-LR-3490, CON-LEG101-LR-11710, CON-LEG101-LR-11660, CON-LEG101-LR-4290, CON-LEG101-LR-3560, CON-LEG101-LR-3480, CON-LEG101-LR-11620, CON-LEG101-LR-11570, CON-LEG101-LR-4280, CON-LEG101-LR-3550, CON-LEG101-LR-3460, CON-LEG101-LR-11530, CON-LEG101-LR-11480, CON-LEG101-LR-4260, CON-LEG101-LR-3540, CON-LEG101-LR-3450, CON-LEG101-LR-11440, CON-LEG101-LR-11390, CON-LEG101-LR-4250, CON-LEG101-LR-11340, CON-LEG101-LR-11280, CON-LEG101-LR-4240, CON-LEG101-LR-3530, CON-LEG101-LR-3440, CON-LEG101-LR-11230, CON-LEG101-LR-11180, CON-LEG101-LR-4230, CON-LEG101-LR-3520, CON-LEG101-LR-3430, CON-LEG101-LR-11130, CON-LEG101-LR-11070, CON-LEG101-LR-4220, CON-LEG101-LR-3510, CON-LEG101-LR-3420, CON-LEG101-LR-11030, CON-LEG101-LR-10970, CON-LEG101-LR-10880, CON-LEG101-LR-10920, CON-LEG101-LR-4200 | 13d |
| CON-LEG101-MS-1140 |  | Completion of Shallow infrastructure network | 0d | 2027-03-18 | 2027-03-18 | CON-LEG101-LR-2070, CON-LEG101-LR-2460, CON-LEG101-LR-2610, CON-LEG101-LR-2680, CON-LEG101-LR-10740, CON-LEG101-LR-1000, CON-LEG101-LR-1110, CON-LEG101-LR-1150, CON-LEG101-LR-8760, CON-LEG101-LR-9330, CON-LEG101-LR-9940, CON-LEG101-LR-8330, CON-LEG101-LR-2320, CON-LEG101-LR-2390, CON-LEG101-LR-2470, CON-LEG101-LR-10750, CON-LEG101-LR-1260, CON-LEG101-LR-1010, CON-LEG101-LR-1120, CON-LEG101-LR-1160, CON-LEG101-LR-8770, CON-LEG101-LR-9340, CON-LEG101-LR-9950, CON-LEG101-LR-8290, CON-LEG101-LR-8340, CON-LEG101-LR-8440, CON-LEG101-LR-2100, CON-LEG101-LR-2210, CON-LEG101-LR-2330, CON-LEG101-LR-2480, CON-LEG101-LR-10760, CON-LEG101-LR-1020, CON-LEG101-LR-1130, CON-LEG101-LR-1170, CON-LEG101-LR-1230, CON-LEG101-LR-1270, CON-LEG101-LR-8780, CON-LEG101-LR-9350, CON-LEG101-LR-9960, CON-LEG101-LR-8300, CON-LEG101-LR-8350, CON-LEG101-LR-8450, CON-LEG101-LR-2110, CON-LEG101-LR-2220, CON-LEG101-LR-2410, CON-LEG101-LR-2490, CON-LEG101-LR-2710, CON-LEG101-LR-10770, CON-LEG101-LR-1030, CON-LEG101-LR-8790, CON-LEG101-LR-9360, CON-LEG101-LR-9970, CON-LEG101-LR-8310, CON-LEG101-LR-8360, CON-LEG101-LR-8460, CON-LEG101-LR-2120, CON-LEG101-LR-2230, CON-LEG101-LR-2340, CON-LEG101-LR-2420, CON-LEG101-LR-2500, CON-LEG101-LR-2640, CON-LEG101-LR-2720, CON-LEG101-LR-10780, CON-LEG101-LR-1040, CON-LEG101-LR-8800, CON-LEG101-LR-9370, CON-LEG101-LR-9900, CON-LEG101-LR-9980, CON-LEG101-LR-8370, CON-LEG101-LR-2130, CON-LEG101-LR-2240, CON-LEG101-LR-2350, CON-LEG101-LR-2430, CON-LEG101-LR-2510, CON-LEG101-LR-2730, CON-LEG101-LR-10790, CON-LEG101-LR-1050, CON-LEG101-LR-1180, CON-LEG101-LR-1280, CON-LEG101-LR-8810, CON-LEG101-LR-9380, CON-LEG101-LR-9990, CON-LEG101-LR-8380, CON-LEG101-LR-2140, CON-LEG101-LR-2740, CON-LEG101-LR-2250, CON-LEG101-LR-2360, CON-LEG101-LR-2440, CON-LEG101-LR-2520, CON-LEG101-LR-2660, CON-LEG101-LR-10800, CON-LEG101-LR-1060, CON-LEG101-LR-1140, CON-LEG101-LR-1240, CON-LEG101-LR-8820, CON-LEG101-LR-9390, CON-LEG101-LR-10000, CON-LEG101-LR-7460, CON-LEG101-LR-8390, CON-LEG101-LR-2150, CON-LEG101-LR-2260, CON-LEG101-LR-2530, CON-LEG101-LR-10810, CON-LEG101-LR-1070, CON-LEG101-LR-8050, CON-LEG101-LR-7950, CON-LEG101-LR-7850, CON-LEG101-LR-9400, CON-LEG101-LR-10010, CON-LEG101-LR-8400, CON-LEG101-LR-2160, CON-LEG101-LR-2270, CON-LEG101-LR-2540, CON-LEG101-LR-10820, CON-LEG101-LR-1080, CON-LEG101-LR-7960, CON-LEG101-LR-8060, CON-LEG101-LR-9410, CON-LEG101-LR-10020, CON-LEG101-LR-8410, CON-LEG101-LR-2170, CON-LEG101-LR-2280, CON-LEG101-LR-2370, CON-LEG101-LR-2450, CON-LEG101-LR-2550, CON-LEG101-LR-2670, CON-LEG101-LR-2750, CON-LEG101-LR-10830, CON-LEG101-LR-1090, CON-LEG101-LR-7970, CON-LEG101-LR-8070, CON-LEG101-LR-8500, CON-LEG101-LR-9420, CON-LEG101-LR-10030, CON-LEG101-LR-8320, CON-LEG101-LR-8420, CON-LEG101-LR-8470, CON-LEG101-LR-8280, CON-LEG101-PR-1970, CON-LEG101-LR-1520, CON-LEG101-LR-2630, CON-LEG101-LR-1570, CON-LEG101-LR-1580, CON-LEG101-LR-1590, CON-LEG101-LR-1620, CON-LEG101-PR-1960, CON-LEG101-LR-15130, CON-LEG101-LR-15140, CON-LEG101-LR-15150, CON-LEG101-LR-15160, CON-LEG101-LR-15170 | 19d |
| CON-LEG101-MS-1150 |  | Completion all Works | 0d | 2027-11-18 | 2027-11-18 | CON-LEG101-MS-1120, CON-LEG101-MS-1130, CON-LEG101-MS-1140, CON-LEG101-MS-1020, CON-LEG101-MS-1050, CON-LEG101-MS-1010, CON-LEG101-MS-1040, CON-LEG101-MS-1030, CON-LEG101-DM-1040, CON-LEG101-DM-1030, CON-LEG101-DM-1020, CON-LEG101-DM-1010, CON-LEG101-DM-1000 | 0d |
|  | 6 | **Monitoring and Control Milestone** |  | 2027-05-04 | 2027-10-18 |  |  |
| CON-LEG101-MS-1050 |  | Completion of Outside Boundary Area's Scope (Tie-in Lines) | 0d | 2027-05-04 | 2027-05-04 | CON-LEG101-OBA-1140, CON-LEG101-OBA-1150, CON-LEG101-OBA-1060, CON-LEG101-OBA-1070, CON-LEG101-OBA-1220, CON-LEG101-OBA-1420, CON-LEG101-OBA-1430, CON-LEG101-OBA-1340, CON-LEG101-OBA-1440, CON-LEG101-OBA-1450, CON-LEG101-OBA-1410, CON-LEG101-OBA-1510 FF | 7d |
| CON-LEG101-MS-1020 |  | Completion of Bridge | 0d | 2027-06-01 | 2027-06-01 | CON-LEG101-BR-1250, CON-LEG101-BR-1020, CON-LEG101-BR-1030, CON-LEG101-BR-1130, CON-LEG101-BR-1060, CON-LEG101-BR-1090, CON-LEG101-BR-1220, CON-LEG101-BR-1230 | 8d |
| CON-LEG101-MS-1010 |  | Completion of Roads Finishing | 0d | 2027-08-03 | 2027-08-03 | CON-LEG101-LR-6080, CON-LEG101-LR-6090, CON-LEG101-LR-6100, CON-LEG101-LR-6110, CON-LEG101-LR-6120, CON-LEG101-LR-6180, CON-LEG101-LR-6380, CON-LEG101-LR-6280, CON-LEG101-LR-6680, CON-LEG101-LR-6780, CON-LEG101-LR-6190, CON-LEG101-LR-6390, CON-LEG101-LR-6290, CON-LEG101-LR-6690, CON-LEG101-LR-6790, CON-LEG101-LR-6200, CON-LEG101-LR-6400, CON-LEG101-LR-6300, CON-LEG101-LR-6700, CON-LEG101-LR-6800, CON-LEG101-LR-6210, CON-LEG101-LR-6410, CON-LEG101-LR-6310, CON-LEG101-LR-6710, CON-LEG101-LR-6810, CON-LEG101-LR-6220, CON-LEG101-LR-6420, CON-LEG101-LR-6320, CON-LEG101-LR-6720, CON-LEG101-LR-6820, CON-LEG101-LR-6230, CON-LEG101-LR-6130, CON-LEG101-LR-6430, CON-LEG101-LR-6330, CON-LEG101-LR-6730, CON-LEG101-LR-6830, CON-LEG101-LR-6240, CON-LEG101-LR-6140, CON-LEG101-LR-6440, CON-LEG101-LR-6340, CON-LEG101-LR-6740, CON-LEG101-LR-6840, CON-LEG101-LR-6250, CON-LEG101-LR-6150, CON-LEG101-LR-6450, CON-LEG101-LR-6350, CON-LEG101-LR-6750, CON-LEG101-LR-6850, CON-LEG101-LR-6260, CON-LEG101-LR-6160, CON-LEG101-LR-6460, CON-LEG101-LR-6360, CON-LEG101-LR-6760, CON-LEG101-LR-6860, CON-LEG101-LR-6270, CON-LEG101-LR-6170, CON-LEG101-LR-6470, CON-LEG101-LR-6370, CON-LEG101-LR-6770, CON-LEG101-LR-6870 | 0d |
| CON-LEG101-MS-1030 |  | Completion of Roundabout & Landscape works | 0d | 2027-10-18 | 2027-10-18 | CON-LEG101-RA-1390, CON-LEG101-RA-1450, CON-LEG101-RA-1090, CON-LEG101-RA-1060, CON-LEG101-RA-1400, CON-LEG101-RA-1460, CON-LEG101-RA-1100, CON-LEG101-RA-1070, CON-LEG101-RA-1410, CON-LEG101-RA-1470, CON-LEG101-RA-1110, CON-LEG101-RA-1080 | 0d |
| CON-LEG101-MS-1040 |  | Completion of Fence and Gate | 0d | 2027-10-18 | 2027-10-18 | CON-LEG101-FG-1340, CON-LEG101-FG-1350, CON-LEG101-FG-1360, CON-LEG101-FG-1270, CON-LEG101-FG-1370, CON-LEG101-FG-1380 | 0d |
|  | 2 | **Mobilization** |  | 2025-11-19 | 2025-12-18 |  |  |
|  | 4 | **Topographic Survey** |  | 2025-11-19 | 2025-11-27 |  |  |
| CON-LEG101-TP-1330 |  | Site Survey Works | 8d | 2025-11-19 | 2025-11-27 | CON-LEG101-MS-1090 SS | 0d |
|  | 2 | **Site Facilities & Offices** |  | 2025-11-19 | 2025-12-18 |  |  |
| CON-LEG101-MB-1340 |  | Site Layout Plan | 6d | 2025-11-19 | 2025-11-25 | CON-LEG101-MS-1090 SS | 0d |
| CON-LEG101-MB-1260 |  | Construct Site Access Roads | 3d | 2025-11-26 | 2025-11-29 | CON-LEG101-MB-1340 | 0d |
| CON-LEG101-MB-1270 |  | Clear & Grub for Offices & Access Road | 2d | 2025-11-26 | 2025-11-27 | CON-LEG101-MB-1340 | 0d |
| CON-LEG101-MB-1250 |  | Construct Temporary Fence | 7d | 2025-11-29 | 2025-12-06 | CON-LEG101-MB-1270 | 0d |
| CON-LEG101-MB-1150 |  | Install Project Signs | 11d | 2025-11-30 | 2025-12-11 | CON-LEG101-MB-1260 | 0d |
| CON-LEG101-MB-1160 |  | Construct Site Offices & Storage | 17d | 2025-11-30 | 2025-12-18 | CON-LEG101-MB-1260 | 0d |
| CON-LEG101-MB-1110 |  | Construct Parking Sheds | 11d | 2025-12-07 | 2025-12-18 | CON-LEG101-MB-1250 | 0d |
| CON-LEG101-MB-1120 |  | Electrical Works & Connections | 11d | 2025-12-07 | 2025-12-18 | CON-LEG101-MB-1250, CON-LEG101-MB-1130 SS | 0d |
| CON-LEG101-MB-1130 |  | Install Site Facilities | 7d | 2025-12-07 | 2025-12-14 | CON-LEG101-MB-1250 | 0d |
| CON-LEG101-MB-1020 |  | Mobilization of Equipment | 6d | 2025-12-13 | 2025-12-18 | CON-LEG101-MB-1150 | 0d |
| CON-LEG101-MB-1000 |  | Mobilization of Manpower | 4d | 2025-12-15 | 2025-12-18 | CON-LEG101-MB-1130 | 0d |
|  | 1 | **Permit's and Authority Approvals** |  | 2025-11-19 | 2025-12-09 |  |  |
| CON-LEG101-PA-1000 |  | Excavation & Backfilling Permit Permit | 18d | 2025-11-19 | 2025-12-09 | CON-LEG101-MS-1090 SS | 8d |
| CON-LEG101-PA-1010 |  | Saudi Electricity Company Permit | 18d | 2025-11-19 | 2025-12-09 | CON-LEG101-MS-1090 SS | 8d |
| CON-LEG101-PA-1020 |  | Utility Clearance (NOC) Permit | 18d | 2025-11-19 | 2025-12-09 | CON-LEG101-MS-1090 SS | 8d |
| CON-LEG101-PA-1030 |  | Landscaping & Irrigation Works Permit Permit | 18d | 2025-11-19 | 2025-12-09 | CON-LEG101-MS-1090 SS | 8d |
| CON-LEG101-PA-1040 |  | Material Transportation Permit (MOT) | 18d | 2025-11-19 | 2025-12-09 | CON-LEG101-MS-1090 SS | 8d |
|  | 3 | **Preliminary Submittals** |  | 2025-11-19 | 2025-12-18 |  |  |
|  | 1 | **Preparation and Submittal by Contractor's** |  | 2025-11-19 | 2025-12-11 |  |  |
| CON-LEG101-PS-1000 |  | Preparation and Submittal of Detailed Work Order Programme (baseline schedule) | 20d | 2025-11-19 | 2025-12-11 | CON-LEG101-MS-1090 SS | 0d |
| CON-LEG101-PS-1010 |  | Preparation and Submittal of Project Execution Plan | 11d | 2025-11-30 | 2025-12-11 | CON-LEG101-MB-1260 | 0d |
| CON-LEG101-PS-1020 |  | Preparation and Submittal of Quality Management Plan | 11d | 2025-11-30 | 2025-12-11 | CON-LEG101-MB-1260 | 0d |
| CON-LEG101-PS-1030 |  | Preparation and Submittal of Safety Management Plan | 11d | 2025-11-30 | 2025-12-11 | CON-LEG101-MB-1260 | 0d |
| CON-LEG101-PS-1040 |  | Preparation and Submittal of Risk Plan | 11d | 2025-11-30 | 2025-12-11 | CON-LEG101-MB-1260 | 0d |
| CON-LEG101-PS-1050 |  | Preparation and Submittal of Project Security Management Plan | 11d | 2025-11-30 | 2025-12-11 | CON-LEG101-MB-1260 | 0d |
| CON-LEG101-PS-1060 |  | Preparation and Submittal of Project Waste Management Plan | 11d | 2025-11-30 | 2025-12-11 | CON-LEG101-MB-1260 | 0d |
| CON-LEG101-PS-1070 |  | Preparation and Submittal of Organization Chart | 11d | 2025-11-30 | 2025-12-11 | CON-LEG101-MB-1260 | 0d |
|  | 2 | **Approval by the Employer's** |  | 2025-11-30 | 2025-12-18 |  |  |
| CON-LEG101-PS-1170 |  | Approval of Comminumcation Plan | 6d | 2025-11-30 | 2025-12-06 | CON-LEG101-MB-1260 | 11d |
| CON-LEG101-PS-1090 |  | Approval of Detailed Work Order Programme (baseline schedule) | 6d | 2025-12-13 | 2025-12-18 | CON-LEG101-PS-1000 | 0d |
| CON-LEG101-PS-1100 |  | Approval of Project Execution Plan | 6d | 2025-12-13 | 2025-12-18 | CON-LEG101-PS-1010 | 0d |
| CON-LEG101-PS-1110 |  | Approval of Quality Management Plan | 6d | 2025-12-13 | 2025-12-18 | CON-LEG101-PS-1020 | 0d |
| CON-LEG101-PS-1120 |  | Approval of Safety Management Plan | 6d | 2025-12-13 | 2025-12-18 | CON-LEG101-PS-1030 | 0d |
| CON-LEG101-PS-1130 |  | Approval of Risk Plan | 6d | 2025-12-13 | 2025-12-18 | CON-LEG101-PS-1040 | 0d |
| CON-LEG101-PS-1140 |  | Approval of Project Security Management Plan | 6d | 2025-12-13 | 2025-12-18 | CON-LEG101-PS-1050 | 0d |
| CON-LEG101-PS-1150 |  | Approval of Project Waste Management Plan | 6d | 2025-12-13 | 2025-12-18 | CON-LEG101-PS-1060 | 0d |
| CON-LEG101-PS-1160 |  | Approval of Organization Chart | 6d | 2025-12-13 | 2025-12-18 | CON-LEG101-PS-1070 | 0d |
|  | 3 | **Engineering** |  | 2025-11-26 | 2026-01-19 |  |  |
|  | 2 | **Shop Drawings** |  | 2025-11-29 | 2026-01-19 |  |  |
|  | 1 | **Shop Drawings Submittal** |  | 2025-11-29 | 2026-01-11 |  |  |
|  | 6 | **Shop Drawings Submittal for Stormwater Utilities** |  | 2025-11-29 | 2025-12-18 |  |  |
| CON-LEG101-EN-1510 |  | Shop DWG Submittal for Stormwater Utilities | 9d | 2025-11-29 | 2025-12-08 | CON-LEG101-TP-1330 | 0d |

| ID | WBS | Task | Duration | Start | Finish | Predecessors | Total float |
| --- | --- | --- | --- | --- | --- | --- | --- |
| CON-LEG101-EN-1520 |  | Shop DWG Submittal for Stormwater Utilities Profiles | 9d | 2025-11-29 | 2025-12-08 | CON-LEG101-EN-1510 SS | 21d |
| CON-LEG101-EN-1530 |  | Shop DWG Submittal for Stormwater Utilities Standard Details | 9d | 2025-12-09 | 2025-12-18 | CON-LEG101-EN-1510 SS, CON-LEG101-EN-1520 | 21d |
|  | 5 | **Shop Drawings Submittal for Sanitary Sewerage** |  | 2025-12-09 | 2025-12-18 |  |  |
| CON-LEG101-EN-1480 |  | Shop DWG Submittal for Sanitary Sewerage | 9d | 2025-12-09 | 2025-12-18 | CON-LEG101-EN-1510 | 0d |
| CON-LEG101-EN-1490 |  | Shop DWG Submittal for Sanitary Sewerage Profiles | 9d | 2025-12-09 | 2025-12-18 | CON-LEG101-EN-1480 SS | 12d |
| CON-LEG101-EN-1500 |  | Shop DWG Submittal for Sanitary Sewerage Standard Details | 9d | 2025-12-09 | 2025-12-18 | CON-LEG101-EN-1490 SS | 12d |
|  | 4 | **Shop Drawings Submittal for TSE Network** |  | 2025-12-20 | 2025-12-24 |  |  |
| CON-LEG101-EN-1450 |  | Shop DWG Submittal for TSE Network | 5d | 2025-12-20 | 2025-12-24 | CON-LEG101-EN-1480 | 0d |
| CON-LEG101-EN-1460 |  | Shop DWG Submittal for TSE Profiles | 5d | 2025-12-20 | 2025-12-24 | CON-LEG101-EN-1450 SS | 7d |
| CON-LEG101-EN-1470 |  | Shop DWG Submittal for TSE Standard Details | 5d | 2025-12-20 | 2025-12-24 | CON-LEG101-EN-1460 SS | 7d |
|  | 3 | **Shop Drawings Submittal for Public Water Utility Distribution** |  | 2025-12-20 | 2025-12-24 |  |  |
| CON-LEG101-EN-1420 |  | Shop DWG Submittal for Public Water Utility Distribution | 5d | 2025-12-20 | 2025-12-24 | CON-LEG101-EN-1450 SS | 0d |
| CON-LEG101-EN-1430 |  | Shop DWG Submittal for Potable Water Profiles | 5d | 2025-12-20 | 2025-12-24 | CON-LEG101-EN-1420 SS | 7d |
| CON-LEG101-EN-1440 |  | Shop DWG Submittal for Potable Water Standard Details | 5d | 2025-12-20 | 2025-12-24 | CON-LEG101-EN-1430 SS | 7d |
|  | 2 | **Shop Drawings Submittal for Electrical Network** |  | 2025-12-25 | 2026-01-04 |  |  |
| CON-LEG101-EN-1390 |  | Shop DWG Submittal for Medium Voltage Network | 9d | 2025-12-25 | 2026-01-04 | CON-LEG101-EN-1420, CON-LEG101-MS-1080 | 7d |
| CON-LEG101-EN-1400 |  | Shop DWG Submittal for Street Lighting | 9d | 2025-12-25 | 2026-01-04 | CON-LEG101-EN-1390 SS | 7d |
| CON-LEG101-EN-1410 |  | Shop DWG Submittal for Low Voltage Network | 9d | 2025-12-25 | 2026-01-04 | CON-LEG101-EN-1390 SS | 7d |
|  | 8 | **Shop Drawings Submittal for Telecommunications** |  | 2025-12-25 | 2026-01-04 |  |  |
| CON-LEG101-EN-3190 |  | Shop DWG Submittal for Telecommunications Works | 9d | 2025-12-25 | 2026-01-04 | CON-LEG101-EN-1420 | 7d |
|  | 9 | **Shop Drawings Submittal for CCTV feeding system and GSM** |  | 2025-12-25 | 2026-01-04 |  |  |
| CON-LEG101-EN-3200 |  | Shop DWG Submittal for CCTV feeding system and GSM | 9d | 2025-12-25 | 2026-01-04 | CON-LEG101-EN-1420 | 7d |
|  | 10 | **Shop Drawings Submittal for Earthing System** |  | 2025-12-25 | 2026-01-04 |  |  |
| CON-LEG101-EN-3210 |  | Shop DWG Submittal for Earthing System | 9d | 2025-12-25 | 2026-01-04 | CON-LEG101-EN-1420 | 7d |
|  | 11 | **Shop Drawings Submittal for Road Lighting** |  | 2025-12-25 | 2026-01-11 |  |  |
| CON-LEG101-EN-1260 |  | Shop DWG Submittal for Street Lighting General Arrangement | 15d | 2025-12-25 | 2026-01-11 | CON-LEG101-EN-1420 | 13d |
| CON-LEG101-EN-1270 |  | Shop DWG Submittal for Street Lighting Network Layout | 15d | 2025-12-25 | 2026-01-11 | CON-LEG101-EN-1260 SS | 13d |
| CON-LEG101-EN-1280 |  | Shop DWG Submittal for Street Lighting Details | 15d | 2025-12-25 | 2026-01-11 | CON-LEG101-EN-1270 SS | 13d |
| CON-LEG101-EN-1290 |  | Shop DWG Submittal for Street Lighting Single Line Diagram | 15d | 2025-12-25 | 2026-01-11 | CON-LEG101-EN-1280 SS | 13d |
|  | 1 | **Shop Drawings Submittal for Road Works** |  | 2025-12-25 | 2026-01-07 |  |  |
| CON-LEG101-EN-1300 |  | Shop DWG Submittal for Topographic Survey | 6d | 2025-12-25 | 2025-12-31 | CON-LEG101-TP-1330, CON-LEG101-EN-1420 | 0d |
| CON-LEG101-EN-1310 |  | Shop DWG Submittal for Road Layout Plan | 6d | 2026-01-01 | 2026-01-07 | CON-LEG101-TP-1330, CON-LEG101-EN-1300 | 0d |
| CON-LEG101-EN-1320 |  | Shop DWG Submittal for Typical Cross Section | 6d | 2026-01-01 | 2026-01-07 | CON-LEG101-TP-1330, CON-LEG101-EN-1310 SS | 0d |
| CON-LEG101-EN-1330 |  | Shop DWG Submittal for Road Setting Out | 6d | 2026-01-01 | 2026-01-07 | CON-LEG101-TP-1330, CON-LEG101-EN-1310 SS | 0d |
| CON-LEG101-EN-1340 |  | Shop DWG Submittal for Road Profiles | 6d | 2026-01-01 | 2026-01-07 | CON-LEG101-TP-1330, CON-LEG101-EN-1300 | 0d |
|  | 14 | **Shop Drawings Submittal for Bridge Works** |  | 2025-12-20 | 2026-01-05 |  |  |
| CON-LEG101-EN-1020 |  | Shop DWG Submittal for Piles Setting out and Reinforcement Details | 15d | 2025-12-20 | 2026-01-05 | CON-LEG101-MB-1000 | 0d |
| CON-LEG101-EN-1030 |  | Shop DWG Submittal for Abutment Setting out and Reinforcement Details | 15d | 2025-12-20 | 2026-01-05 | CON-LEG101-MB-1000 | 0d |
| CON-LEG101-EN-1040 |  | Shop DWG Submittal for Pier and Pilecap Setting out and Reinforcement Details | 15d | 2025-12-20 | 2026-01-05 | CON-LEG101-MB-1000, CON-LEG101-EN-1030 SS | 0d |
| CON-LEG101-EN-1060 |  | Shop DWG Submittal for Deck Slab Setting out and Reinforcement Details | 15d | 2025-12-20 | 2026-01-05 | CON-LEG101-MB-1000 | 0d |
| CON-LEG101-EN-1070 |  | Shop DWG Submittal for Bearing Setting out and Details | 15d | 2025-12-20 | 2026-01-05 | CON-LEG101-MB-1000, CON-LEG101-EN-1090 SS | 0d |
| CON-LEG101-EN-1080 |  | Shop DWG Submittal for Deflection Diagram | 15d | 2025-12-20 | 2026-01-05 | CON-LEG101-MB-1000, CON-LEG101-EN-1020 SS | 0d |
| CON-LEG101-EN-1090 |  | Shop DWG Submittal for Appron Slab Details | 15d | 2025-12-20 | 2026-01-05 | CON-LEG101-MB-1000, CON-LEG101-EN-1060 SS | 0d |
| CON-LEG101-EN-1100 |  | Shop DWG Submittal for Finishing Works Details | 15d | 2025-12-20 | 2026-01-05 | CON-LEG101-MB-1000, CON-LEG101-EN-1070 SS | 0d |
|  | 12 | **Shop Drawings Submittal for Irrigation Works** |  | 2025-12-20 | 2025-12-29 |  |  |
| CON-LEG101-EN-3220 |  | Shop DWG Submittal for Secondary Irrigation Pipe Works | 9d | 2025-12-20 | 2025-12-29 | CON-LEG101-MB-1000 | 9d |
| CON-LEG101-EN-3230 |  | Shop DWG Submittal for Secondary Irrigation Valves and Controller Works | 9d | 2025-12-20 | 2025-12-29 | CON-LEG101-EN-3220 SS | 12d |
|  | 13 | **Shop Drawings Submittal for Landscape Works** |  | 2025-12-20 | 2025-12-29 |  |  |
| CON-LEG101-EN-3240 |  | Shop DWG Submittal for Preparation Works | 9d | 2025-12-20 | 2025-12-29 | CON-LEG101-EN-3220 SS | 9d |
| CON-LEG101-EN-3250 |  | Shop DWG Submittal for Placing Agricutural Soil works | 9d | 2025-12-20 | 2025-12-29 | CON-LEG101-EN-3240 SS | 9d |
| CON-LEG101-EN-3260 |  | Shop DWG Submittal for Planting Works | 9d | 2025-12-20 | 2025-12-29 | CON-LEG101-EN-3250 SS | 9d |
| CON-LEG101-EN-3270 |  | Shop DWG Submittal for Curb Setting Out Points | 9d | 2025-12-20 | 2025-12-29 | CON-LEG101-EN-3260 SS | 9d |
|  | 7 | **Shop Drawings Submittal for Fence & Gates** |  | 2025-12-20 | 2025-12-29 |  |  |
| CON-LEG101-EN-1540 |  | Shop DWG Submittal for the Fence & Gates - Civil Works | 9d | 2025-12-20 | 2025-12-29 | CON-LEG101-EN-3240 SS | 9d |
| CON-LEG101-EN-1550 |  | Shop DWG Submittal for the Fence & Gates - Mechanical Works | 9d | 2025-12-20 | 2025-12-29 | CON-LEG101-EN-1540 SS | 9d |
| CON-LEG101-EN-1560 |  | Shop DWG Submittal for the Fence & Gates - Finishing Works | 9d | 2025-12-20 | 2025-12-29 | CON-LEG101-EN-1550 SS | 9d |
|  | 2 | **Shop Drawings Approval** |  | 2025-12-09 | 2026-01-19 |  |  |
|  | 6 | **Shop Drawings Approval for Storm Network** |  | 2025-12-09 | 2025-12-29 |  |  |
| CON-LEG101-EN-1780 |  | Shop DWG Approval for Stormwater Utilities | 6d | 2025-12-09 | 2025-12-15 | CON-LEG101-EN-1510 | 18d |
| CON-LEG101-EN-1790 |  | Shop DWG Approval for Stormwater UtilitiesProfiles | 6d | 2025-12-16 | 2025-12-22 | CON-LEG101-EN-1520, CON-LEG101-EN-1780 | 18d |
| CON-LEG101-EN-1800 |  | Shop DWG Approval for Stormwater UtilitiesStandard Details | 6d | 2025-12-23 | 2025-12-29 | CON-LEG101-EN-1530, CON-LEG101-EN-1790 | 18d |
|  | 5 | **Shop Drawings Approval for Sanitary Sewerage** |  | 2025-12-20 | 2025-12-25 |  |  |
| CON-LEG101-EN-1750 |  | Shop DWG Approval for Sanitary Sewerage | 6d | 2025-12-20 | 2025-12-25 | CON-LEG101-EN-1480 | 21d |
| CON-LEG101-EN-1760 |  | Shop DWG Approval for Sanitary Sewerage Profiles | 6d | 2025-12-20 | 2025-12-25 | CON-LEG101-EN-1490 | 21d |
| CON-LEG101-EN-1770 |  | Shop DWG Approval for Sanitary Sewerage Standard Details | 6d | 2025-12-20 | 2025-12-25 | CON-LEG101-EN-1500 | 12d |
|  | 4 | **Shop Drawings Approval for TSE Network** |  | 2025-12-25 | 2025-12-31 |  |  |
| CON-LEG101-EN-1720 |  | Shop DWG Approval for TSE Network | 6d | 2025-12-25 | 2025-12-31 | CON-LEG101-EN-1450 | 7d |
| CON-LEG101-EN-1730 |  | Shop DWG Approval for TSE Profiles | 6d | 2025-12-25 | 2025-12-31 | CON-LEG101-EN-1460 | 16d |
| CON-LEG101-EN-1740 |  | Shop DWG Approval for TSE Standard Details | 6d | 2025-12-25 | 2025-12-31 | CON-LEG101-EN-1470 | 7d |
|  | 3 | **Shop Drawings Approval for Public Water Utility Distribution** |  | 2025-12-25 | 2025-12-31 |  |  |

| ID | WBS | Task | Duration | Start | Finish | Predecessors | Total float |
| --- | --- | --- | --- | --- | --- | --- | --- |
| CON-LEG101-EN-1690 |  | Shop DWG Approval for Public Water Utility Distribution | 6d | 2025-12-25 | 2025-12-31 | CON-LEG101-EN-1420 | 7d |
| CON-LEG101-EN-1700 |  | Shop DWG Approval for Potable Water Profiles | 6d | 2025-12-25 | 2025-12-31 | CON-LEG101-EN-1430 | 16d |
| CON-LEG101-EN-1710 |  | Shop DWG Approval for Potable Water Standard Details | 6d | 2025-12-25 | 2025-12-31 | CON-LEG101-EN-1440 | 7d |
|  | 2 | **Shop Drawings Approval for Electrical Network** |  | 2026-01-05 | 2026-01-11 |  |  |
| CON-LEG101-EN-1660 |  | Shop DWG Approval for Medium Voltage Network | 6d | 2026-01-05 | 2026-01-11 | CON-LEG101-EN-1390 | 7d |
| CON-LEG101-EN-1670 |  | Shop DWG Approval for Street Lighting | 6d | 2026-01-05 | 2026-01-11 | CON-LEG101-EN-1400 | 7d |
| CON-LEG101-EN-1680 |  | Shop DWG Approval for Low Voltage Network | 6d | 2026-01-05 | 2026-01-11 | CON-LEG101-EN-1410 | 7d |
|  | 8 | **Shop Drawings Approval for Telecommunications** |  | 2026-01-05 | 2026-01-11 |  |  |
| CON-LEG101-EN-3280 |  | Shop DWG Approval for Telecommunications Works | 6d | 2026-01-05 | 2026-01-11 | CON-LEG101-EN-3190 | 7d |
|  | 9 | **Shop Drawings Approval for CCTV feeding system and GSM** |  | 2026-01-05 | 2026-01-11 |  |  |
| CON-LEG101-EN-3290 |  | Shop DWG Approval for CCTV feeding system and GSM | 6d | 2026-01-05 | 2026-01-11 | CON-LEG101-EN-3200 | 7d |
|  | 10 | **Shop Drawings Approval for Earthing System** |  | 2026-01-05 | 2026-01-11 |  |  |
| CON-LEG101-EN-3300 |  | Shop DWG Approval for Earthing System | 6d | 2026-01-05 | 2026-01-11 | CON-LEG101-EN-3210 | 7d |
|  | 11 | **Shop Drawings Approval for Road Lighting** |  | 2025-12-29 | 2026-01-04 |  |  |
| CON-LEG101-EN-3310 |  | Shop DWG Approval for Street Lighting General Arrangement | 6d | 2025-12-29 | 2026-01-04 | CON-LEG101-EN-1260 SS+3d | 13d |
| CON-LEG101-EN-3320 |  | Shop DWG Approval for Street Lighting Network Layout | 6d | 2025-12-29 | 2026-01-04 | CON-LEG101-EN-1270 SS+3d | 13d |
| CON-LEG101-EN-3330 |  | Shop DWG Approval for Street Lighting Details | 6d | 2025-12-29 | 2026-01-04 | CON-LEG101-EN-1280 SS+3d | 13d |
| CON-LEG101-EN-3360 |  | Shop DWG Approval for Street Lighting Single Line Diagram | 6d | 2025-12-29 | 2026-01-04 | CON-LEG101-EN-1290 SS+3d | 13d |
|  | 1 | **Shop Drawings Approval for Road Works** |  | 2026-01-01 | 2026-01-19 |  |  |
| CON-LEG101-EN-1570 |  | Shop DWG Approval for Topographic Survey | 15d | 2026-01-01 | 2026-01-18 | CON-LEG101-EN-1300 | 1d |
| CON-LEG101-EN-1580 |  | Shop DWG Approval for Road Layout Plan | 10d | 2026-01-08 | 2026-01-19 | CON-LEG101-EN-1310 | 0d |
| CON-LEG101-EN-1590 |  | Shop DWG Approval for Typical Cross Section | 10d | 2026-01-08 | 2026-01-19 | CON-LEG101-EN-1320 | 0d |
| CON-LEG101-EN-1600 |  | Shop DWG Approval for Road Setting Out | 10d | 2026-01-08 | 2026-01-19 | CON-LEG101-EN-1330 | 0d |
| CON-LEG101-EN-1610 |  | Shop DWG Approval for Road Profiles | 10d | 2026-01-08 | 2026-01-19 | CON-LEG101-EN-1340 | 0d |
|  | 12 | **Shop Drawings Approval for Bridge Works** |  | 2026-01-06 | 2026-01-19 |  |  |
| CON-LEG101-EN-1150 |  | Shop DWG Approval for Piles Setting out and Reinforcement Details | 12d | 2026-01-06 | 2026-01-19 | CON-LEG101-EN-1020 | 0d |
| CON-LEG101-EN-1160 |  | Shop DWG Approval for Abutment Setting out and Reinforcement Details | 12d | 2026-01-06 | 2026-01-19 | CON-LEG101-EN-1030 | 0d |
| CON-LEG101-EN-1170 |  | Shop DWG Approval for Pier and Pilecap Setting out and Reinforcement Details | 12d | 2026-01-06 | 2026-01-19 | CON-LEG101-EN-1040 | 0d |
| CON-LEG101-EN-1190 |  | Shop DWG Approval for Deck Slab Setting out and Reinforcement Details | 12d | 2026-01-06 | 2026-01-19 | CON-LEG101-EN-1060 | 0d |
| CON-LEG101-EN-1200 |  | Shop DWG Approval for Bearing Setting out and Details | 12d | 2026-01-06 | 2026-01-19 | CON-LEG101-EN-1070 | 0d |
| CON-LEG101-EN-1210 |  | Shop DWG Approval for Deflection Diagram | 12d | 2026-01-06 | 2026-01-19 | CON-LEG101-EN-1080 | 0d |
| CON-LEG101-EN-1220 |  | Shop DWG Approval for Appron Slab Details | 12d | 2026-01-06 | 2026-01-19 | CON-LEG101-EN-1090 | 0d |
| CON-LEG101-EN-1230 |  | Shop DWG Approval for Finishing Works Details | 12d | 2026-01-06 | 2026-01-19 | CON-LEG101-EN-1100 | 0d |
|  | 13 | **Shop Drawings Approval for Irrigation Works** |  | 2025-12-30 | 2026-01-05 |  |  |
| CON-LEG101-EN-3340 |  | Shop DWG Approval for Secondary Irrigation Pipe Works | 6d | 2025-12-30 | 2026-01-05 | CON-LEG101-EN-3220 | 12d |
| CON-LEG101-EN-3350 |  | Shop DWG Approval for Secondary Irrigation Valves and Controller Works | 6d | 2025-12-30 | 2026-01-05 | CON-LEG101-EN-3230 | 12d |
|  | 14 | **Shop Drawings Approval for Landscape Works** |  | 2025-12-30 | 2026-01-08 |  |  |
| CON-LEG101-EN-3370 |  | Shop DWG Approval for Preparation Works | 9d | 2025-12-30 | 2026-01-08 | CON-LEG101-EN-3240 | 9d |
| CON-LEG101-EN-3380 |  | Shop DWG Approval for Placing Agricutural Soil works | 9d | 2025-12-30 | 2026-01-08 | CON-LEG101-EN-3250 | 9d |
| CON-LEG101-EN-3390 |  | Shop DWG Approval for Planting Works | 9d | 2025-12-30 | 2026-01-08 | CON-LEG101-EN-3260 | 9d |
| CON-LEG101-EN-3400 |  | Shop DWG Approval for Curb Setting Out Points | 9d | 2025-12-30 | 2026-01-08 | CON-LEG101-EN-3270 | 9d |
|  | 7 | **Shop Drawings Approval forFence & Gates** |  | 2025-12-30 | 2026-01-08 |  |  |
| CON-LEG101-EN-3410 |  | Shop DWG Approval for the Fence & Gates - Civil Works | 9d | 2025-12-30 | 2026-01-08 | CON-LEG101-EN-1540 | 9d |
| CON-LEG101-EN-3420 |  | Shop DWG Approval for the Fence & Gates - Mechanical Works | 9d | 2025-12-30 | 2026-01-08 | CON-LEG101-EN-1550 | 9d |
| CON-LEG101-EN-3430 |  | Shop DWG Approval for the Fence & Gates - Finishing Works | 9d | 2025-12-30 | 2026-01-08 | CON-LEG101-EN-1560 | 9d |
|  | 3 | **Method Statements** |  | 2025-11-26 | 2026-01-19 |  |  |
|  | 1 | **Method Statements Submittal** |  | 2025-11-26 | 2026-01-12 |  |  |
| CON-LEG101-EN-1810 |  | Preparation & Submission of Method Statement for Earth Works | 14d | 2025-11-26 | 2025-12-11 | CON-LEG101-MB-1340 | 0d |
| CON-LEG101-EN-1820 |  | Preparation & Submission of Method Statement for Concrete Works | 14d | 2025-11-30 | 2025-12-15 | CON-LEG101-MB-1340, CON-LEG101-EN-1810 SS+3d | 0d |
| CON-LEG101-EN-1860 |  | Preparation & Submission of Method Statement for Storm Network | 14d | 2025-11-30 | 2025-12-15 | CON-LEG101-MB-1340, CON-LEG101-MS-1090 SS, CON-LEG101-EN-1820 SS | 6d |
| CON-LEG101-EN-1870 |  | Preparation & Submission of Method Statement for Sewer Network | 14d | 2025-11-30 | 2025-12-15 | CON-LEG101-MB-1340, CON-LEG101-MS-1090 SS, CON-LEG101-EN-1860 SS | 6d |
| CON-LEG101-EN-1830 |  | Preparation & Submission of Method Statement for Waterproofing Works | 14d | 2025-12-03 | 2025-12-18 | CON-LEG101-MB-1340, CON-LEG101-EN-1820 SS+3d | 0d |
| CON-LEG101-EN-1880 |  | Preparation & Submission of Method Statement for Potable Water Network | 14d | 2025-12-03 | 2025-12-18 | CON-LEG101-MB-1340, CON-LEG101-MS-1090 SS, CON-LEG101-EN-1870 SS+3d | 9d |
| CON-LEG101-EN-1890 |  | Preparation & Submission of Method Statement for TSE Network | 14d | 2025-12-07 | 2025-12-22 | CON-LEG101-MB-1340, CON-LEG101-MS-1090 SS, CON-LEG101-EN-1880 SS+3d | 12d |
| CON-LEG101-EN-1930 |  | Preparation & Submission of Method Statement for Piles of Bridge | 14d | 2025-12-08 | 2025-12-23 | CON-LEG101-MB-1340, CON-LEG101-MS-1090 SS, CON-LEG101-EN-1820 SS+7d | 11d |
| CON-LEG101-EN-1900 |  | Preparation & Submission of Method Statement for Electrical System | 14d | 2025-12-10 | 2025-12-25 | CON-LEG101-MB-1340, CON-LEG101-MS-1090 SS, CON-LEG101-EN-1890 SS+3d | 12d |
| CON-LEG101-EN-1940 |  | Preparation & Submission of Method Statement for Girders & Post Tension | 14d | 2025-12-11 | 2025-12-27 | CON-LEG101-MB-1340, CON-LEG101-MS-1090 SS, CON-LEG101-EN-1930 SS+3d | 11d |
| CON-LEG101-EN-1910 |  | Preparation & Submission of Method Statement for Low Current System & CCTV | 14d | 2025-12-14 | 2025-12-29 | CON-LEG101-MB-1340, CON-LEG101-MS-1090 SS, CON-LEG101-EN-1900 SS+3d | 12d |
| CON-LEG101-EN-1920 |  | Preparation & Submission of Method Statement for Telecome System | 14d | 2025-12-14 | 2025-12-29 | CON-LEG101-MB-1340, CON-LEG101-MS-1090 SS, CON-LEG101-EN-1910 SS | 12d |
| CON-LEG101-EN-1950 |  | Preparation & Submission of Method Statement for Bridge Slabs | 14d | 2025-12-15 | 2025-12-30 | CON-LEG101-MB-1340, CON-LEG101-MS-1090 SS, CON-LEG101-EN-1940 SS+3d | 11d |
| CON-LEG101-EN-1960 |  | Preparation & Submission of Method Statement for Fence and Gates | 14d | 2025-12-16 | 2025-12-31 | CON-LEG101-MB-1340, CON-LEG101-MS-1090 SS, CON-LEG101-EN-1820 | 10d |
| CON-LEG101-EN-1840 |  | Preparation & Submission of Method Statement for Asphalt | 14d | 2025-12-20 | 2026-01-04 | CON-LEG101-MB-1340, CON-LEG101-EN-1830 | 0d |
| CON-LEG101-EN-1850 |  | Preparation & Submission of Method Statement for Paving | 14d | 2025-12-28 | 2026-01-12 | CON-LEG101-MS-1090 SS, CON-LEG101-MB-1340, CON-LEG101-EN-1840 SS+7d | 0d |
|  | 2 | **Method Statements Approval** |  | 2025-12-13 | 2026-01-19 |  |  |
| CON-LEG101-EN-3440 |  | Approval of Method Statement for Earth Works | 6d | 2025-12-13 | 2025-12-18 | CON-LEG101-EN-1810 | 9d |
| CON-LEG101-EN-3500 |  | Approval of Method Statement for Sewer Network | 6d | 2025-12-16 | 2025-12-22 | CON-LEG101-EN-1870 | 6d |
| CON-LEG101-EN-3450 |  | Approval of Method Statement for Concrete Works | 6d | 2025-12-20 | 2025-12-25 | CON-LEG101-EN-1820, CON-LEG101-EN-3440 | 9d |
| CON-LEG101-EN-3510 |  | Approval of Method Statement for Potable Water Network | 6d | 2025-12-23 | 2025-12-29 | CON-LEG101-EN-1880, CON-LEG101-EN-3500 | 6d |
| CON-LEG101-EN-3560 |  | Approval of Method Statement for Piles of Bridge | 6d | 2025-12-24 | 2025-12-30 | CON-LEG101-EN-1930 | 17d |
| CON-LEG101-EN-3530 |  | Approval of Method Statement for Electrical System | 6d | 2025-12-27 | 2026-01-01 | CON-LEG101-EN-1900 | 15d |

| ID | WBS | Task | Duration | Start | Finish | Predecessors | Total float |
| --- | --- | --- | --- | --- | --- | --- | --- |
| CON-LEG101-EN-3570 |  | Approval of Method Statement for Girders & Post Tension | 6d | 2025-12-28 | 2026-01-03 | CON-LEG101-EN-1940 | 14d |
| CON-LEG101-EN-3460 |  | Approval of Method Statement for Waterproofing Works | 6d | 2025-12-30 | 2026-01-05 | CON-LEG101-EN-1830, CON-LEG101-EN-3450, CON-LEG101-EN-3510 | 6d |
| CON-LEG101-EN-3540 |  | Approval of Method Statement for Low Current System & CCTV | 6d | 2025-12-30 | 2026-01-05 | CON-LEG101-EN-1910 | 12d |
| CON-LEG101-EN-3550 |  | Approval of Method Statement for Telecome System | 6d | 2025-12-30 | 2026-01-05 | CON-LEG101-EN-1920 | 12d |
| CON-LEG101-EN-3580 |  | Approval of Method Statement for Bridge Slabs | 6d | 2025-12-31 | 2026-01-06 | CON-LEG101-EN-1950 | 11d |
| CON-LEG101-EN-3590 |  | Approval of Method Statement for Fence and Gates | 6d | 2026-01-01 | 2026-01-07 | CON-LEG101-EN-1960 | 10d |
| CON-LEG101-EN-3470 |  | Approval of Method Statement for Asphalt | 6d | 2026-01-05 | 2026-01-11 | CON-LEG101-EN-1840 | 7d |
| CON-LEG101-EN-3490 |  | Approval of Method Statement for Storm Network | 6d | 2026-01-06 | 2026-01-12 | CON-LEG101-EN-1860, CON-LEG101-EN-3460 | 6d |
| CON-LEG101-EN-3520 |  | Approval of Method Statement for TSE Network | 6d | 2026-01-06 | 2026-01-12 | CON-LEG101-EN-1890, CON-LEG101-EN-3460 | 6d |
| CON-LEG101-EN-3480 |  | Approval of Method Statement for Paving | 6d | 2026-01-13 | 2026-01-19 | CON-LEG101-EN-1850 | 0d |
|  | 4 | **Pre-qualification and Material** |  | 2025-12-15 | 2026-01-19 |  |  |
|  | 1 | **Road Works - Civil** |  | 2025-12-15 | 2026-01-11 |  |  |
|  | 1 | **Steel Reinforcement** |  | 2025-12-15 | 2025-12-27 |  |  |
| CON-LEG101-SB-4260 |  | Pre-qualification and Material Submittal for Steel Reinforcement | 5d | 2025-12-15 | 2025-12-20 | CON-LEG101-TP-1330, CON-LEG101-MS-1090 SS, CON-LEG101-MB-1000 SS | 0d |
| CON-LEG101-SB-4270 |  | Pre-qualification and Material Approval for Steel Reinforcement | 6d | 2025-12-21 | 2025-12-27 | CON-LEG101-SB-4260 | 0d |
|  | 2 | **Ready Mixed Concrete** |  | 2025-12-21 | 2025-12-30 |  |  |
| CON-LEG101-SB-4280 |  | Pre-qualification and Material Submittal for Ready Mixed Concrete | 3d | 2025-12-21 | 2025-12-23 | CON-LEG101-SB-4260 | 7d |
| CON-LEG101-SB-4290 |  | Pre-qualification and Material Approval for Ready Mixed Concrete | 6d | 2025-12-24 | 2025-12-30 | CON-LEG101-SB-4280 | 16d |
|  | 3 | **Water Proofing** |  | 2025-12-24 | 2026-01-05 |  |  |
| CON-LEG101-SB-4300 |  | Pre-qualification and Material Submittal for Water Proofing | 5d | 2025-12-24 | 2025-12-29 | CON-LEG101-SB-4280 | 7d |
| CON-LEG101-SB-4310 |  | Pre-qualification and Material Approval for Water Proofing | 6d | 2025-12-30 | 2026-01-05 | CON-LEG101-SB-4300 | 12d |
|  | 4 | **Aggregate Base Course** |  | 2025-12-24 | 2026-01-05 |  |  |
| CON-LEG101-SB-1020 |  | Pre-qualification and Material Submittal for Aggregate Base Cource | 5d | 2025-12-24 | 2025-12-29 | CON-LEG101-SB-4300 SS | 7d |
| CON-LEG101-SB-1030 |  | Pre-qualification and Material Approval for Aggregate Base Cource | 6d | 2025-12-30 | 2026-01-05 | CON-LEG101-SB-1020 | 12d |
|  | 5 | **Bituminous Base & Wearing Course** |  | 2025-12-30 | 2026-01-11 |  |  |
| CON-LEG101-SB-1060 |  | Pre-qualification and Material Submittal for Bituminous Base & Wearing Cource | 5d | 2025-12-30 | 2026-01-04 | CON-LEG101-SB-1020 | 7d |
| CON-LEG101-SB-1070 |  | Pre-qualification and Material Approval for Bituminous Base & Wearing Cource | 6d | 2026-01-05 | 2026-01-11 | CON-LEG101-SB-1060 | 7d |
|  | 7 | **Precast Concrete Kerb** |  | 2025-12-30 | 2026-01-11 |  |  |
| CON-LEG101-SB-1100 |  | Pre-qualification and Material Submittal for Precast Concrete Kerb | 5d | 2025-12-30 | 2026-01-04 | CON-LEG101-SB-1060 SS | 7d |
| CON-LEG101-SB-1110 |  | Pre-qualification and Material Approval for Precast Concrete Kerb | 6d | 2026-01-05 | 2026-01-11 | CON-LEG101-SB-1100 | 7d |
|  | 8 | **Interlocking Block Pavers** |  | 2025-12-30 | 2026-01-11 |  |  |
| CON-LEG101-SB-1140 |  | Pre-qualification and Material Submittal for Interlocking Block Pavers | 5d | 2025-12-30 | 2026-01-04 | CON-LEG101-SB-1100 SS | 7d |
| CON-LEG101-SB-1150 |  | Pre-qualification and Material Approval for Interlocking Block Pavers | 6d | 2026-01-05 | 2026-01-11 | CON-LEG101-SB-1140 | 7d |
|  | 9 | **Pavement Markings** |  | 2025-12-30 | 2026-01-11 |  |  |
| CON-LEG101-SB-1180 |  | Pre-qualification and Material Submittal for Pavement Markings | 5d | 2025-12-30 | 2026-01-04 | CON-LEG101-SB-1140 SS | 7d |
| CON-LEG101-SB-1190 |  | Pre-qualification and Material Approval for Pavement Markings | 6d | 2026-01-05 | 2026-01-11 | CON-LEG101-SB-1180 | 7d |
|  | 11 | **Handicap ramp** |  | 2025-12-30 | 2026-01-11 |  |  |
| CON-LEG101-SB-2130 |  | Pre-qualification and Material Submittal for Handicap ramp | 5d | 2025-12-30 | 2026-01-04 | CON-LEG101-SB-1180 SS | 7d |
| CON-LEG101-SB-2370 |  | Pre-qualification and Material Approval for Handicap ramp | 6d | 2026-01-05 | 2026-01-11 | CON-LEG101-SB-2130 | 7d |
|  | 10 | **Traffic Signs** |  | 2025-12-30 | 2026-01-11 |  |  |
| CON-LEG101-SB-1220 |  | Pre-qualification and Material Submittal for Traffic Signs | 5d | 2025-12-30 | 2026-01-04 | CON-LEG101-SB-1060 SS | 7d |
| CON-LEG101-SB-1230 |  | Pre-qualification and Material Approval for Traffic Signs | 6d | 2026-01-05 | 2026-01-11 | CON-LEG101-SB-1220 | 7d |
|  | 7 | **Stormwater Utilities** |  | 2025-12-16 | 2026-01-12 |  |  |
|  | 2 | **GRP Pipes** |  | 2025-12-16 | 2025-12-30 |  |  |
| CON-LEG101-SB-1580 |  | Pre-qualification and Material Submittal for GRP Pipe | 7d | 2025-12-16 | 2025-12-23 | CON-LEG101-MS-1090 SS, CON-LEG101-PS-1110 SS+3d | 0d |
| CON-LEG101-SB-1590 |  | Pre-qualification and Material Approval for GRP Pipe | 6d | 2025-12-24 | 2025-12-30 | CON-LEG101-SB-1580 | 10d |
|  | 4 | **Inlet Manholes** |  | 2025-12-24 | 2026-01-04 |  |  |
| CON-LEG101-SB-3320 |  | Pre-qualification and Material Submittal for Inlet Manholes | 4d | 2025-12-24 | 2025-12-28 | CON-LEG101-SB-1580 | 6d |
| CON-LEG101-SB-3330 |  | Pre-qualification and Material Approval for Inlet Manholes | 6d | 2025-12-29 | 2026-01-04 | CON-LEG101-SB-3320 | 13d |
|  | 1 | **UPVC Pipes** |  | 2025-12-16 | 2025-12-29 |  |  |
| CON-LEG101-SB-1540 |  | Pre-qualification and Material Submittal for UPVC Pipes | 6d | 2025-12-16 | 2025-12-22 | CON-LEG101-MS-1090, CON-LEG101-SB-1580 SS | 10d |
| CON-LEG101-SB-1550 |  | Pre-qualification and Material Approval for UPVC Pipes | 6d | 2025-12-23 | 2025-12-29 | CON-LEG101-SB-1540 | 10d |
|  | 6 | **Concrete chambers** |  | 2025-12-29 | 2026-01-12 |  |  |
| CON-LEG101-SB-1620 |  | Pre-qualification and Material Submittal for Concrete chambers | 7d | 2025-12-29 | 2026-01-05 | CON-LEG101-SB-1540, CON-LEG101-SB-3320 | 6d |
| CON-LEG101-SB-1630 |  | Pre-qualification and Material Approval for Concrete chambers | 6d | 2026-01-06 | 2026-01-12 | CON-LEG101-SB-1620 | 6d |
|  | 6 | **Sanitary Sewerage** |  | 2025-12-16 | 2026-01-07 |  |  |
|  | 1 | **GRP Pipes** |  | 2025-12-16 | 2025-12-30 |  |  |
| CON-LEG101-SB-1460 |  | Pre-qualification and Material Submittal for GRP Pipe | 7d | 2025-12-16 | 2025-12-23 | CON-LEG101-SB-1580 SS | 0d |
| CON-LEG101-SB-1470 |  | Pre-qualification and Material Approval for GRP Pipe | 6d | 2025-12-24 | 2025-12-30 | CON-LEG101-SB-1460 | 0d |
|  | 2 | **Fiberglass Manholes** |  | 2025-12-24 | 2026-01-07 |  |  |
| CON-LEG101-SB-1500 |  | Pre-qualification and Material Submittal for Fiberglass Manholes | 7d | 2025-12-24 | 2025-12-31 | CON-LEG101-SB-1460 | 8d |
| CON-LEG101-SB-1510 |  | Pre-qualification and Material Approval for Fiberglass Manholes | 6d | 2026-01-01 | 2026-01-07 | CON-LEG101-SB-1500 | 8d |
|  | 13 | **TSE Network** |  | 2025-12-24 | 2026-01-12 |  |  |
|  | 1 | **HDPE Pipe (PN 16)** |  | 2025-12-24 | 2026-01-05 |  |  |
| CON-LEG101-SB-1420 |  | Pre-qualification and Material Submittal for HDPE Pipe (PN 16) | 5d | 2025-12-24 | 2025-12-29 | CON-LEG101-SB-1460 | 3d |
| CON-LEG101-SB-1430 |  | Pre-qualification and Material Approval for HDPE Pipe (PN 16) | 6d | 2025-12-30 | 2026-01-05 | CON-LEG101-SB-1420 | 12d |
|  | 2 | **Fire Hydrant** |  | 2025-12-30 | 2026-01-11 |  |  |
| CON-LEG101-SB-2100 |  | Pre-qualification and Material Submittal for Fire Hydrant | 5d | 2025-12-30 | 2026-01-04 | CON-LEG101-SB-1420 | 6d |
| CON-LEG101-SB-2110 |  | Pre-qualification and Material Approval for Fire Hydrant | 6d | 2026-01-05 | 2026-01-11 | CON-LEG101-SB-2100 | 7d |
|  | 3 | **Valves** |  | 2026-01-01 | 2026-01-12 |  |  |

| ID | WBS | Task | Duration | Start | Finish | Predecessors | Total float |
| --- | --- | --- | --- | --- | --- | --- | --- |
| CON-LEG101-SB-2060 |  | Pre-qualification and Material Submittal for Valves | 4d | 2026-01-01 | 2026-01-05 | CON-LEG101-SB-2100 SS+2d | 6d |
| CON-LEG101-SB-2070 |  | Pre-qualification and Material Approval for Valves | 6d | 2026-01-06 | 2026-01-12 | CON-LEG101-SB-2060 | 6d |
|  | 5 | **Public Water Utility Distribution** |  | 2025-12-25 | 2026-01-11 |  |  |
|  | 1 | **HDPE Pipe (PN 16)** |  | 2025-12-25 | 2026-01-06 |  |  |
| CON-LEG101-SB-1380 |  | Pre-qualification and Material Submittal for HDPE Pipe (PN 16) | 5d | 2025-12-25 | 2025-12-30 | CON-LEG101-SB-1420 SS+1d | 7d |
| CON-LEG101-SB-1390 |  | Pre-qualification and Material Approval for HDPE Pipe (PN 16) | 6d | 2025-12-31 | 2026-01-06 | CON-LEG101-SB-1380 | 11d |
|  | 4 | **Valves** |  | 2025-12-31 | 2026-01-11 |  |  |
| CON-LEG101-SB-2020 |  | Pre-qualification and Material Submittal for Valves | 4d | 2025-12-31 | 2026-01-04 | CON-LEG101-SB-1380 | 7d |
| CON-LEG101-SB-2030 |  | Pre-qualification and Material Approval for Valves | 6d | 2026-01-05 | 2026-01-11 | CON-LEG101-SB-2020 | 7d |
|  | 2 | **Bridge Works** |  | 2025-12-24 | 2026-01-11 |  |  |
|  | 3 | **Prestressing Strands** |  | 2025-12-24 | 2026-01-05 |  |  |
| CON-LEG101-SB-3740 |  | Pre-qualification and Material Submittal for Prestressing Strands | 5d | 2025-12-24 | 2025-12-29 | CON-LEG101-SB-4300 SS | 7d |
| CON-LEG101-SB-3750 |  | Pre-qualification and Material Approval for Prestressing Strands | 6d | 2025-12-30 | 2026-01-05 | CON-LEG101-SB-3740 | 12d |
|  | 5 | **Bridge Bearings** |  | 2025-12-30 | 2026-01-11 |  |  |
| CON-LEG101-SB-3780 |  | Pre-qualification and Material Submittal for Bridge Bearings | 5d | 2025-12-30 | 2026-01-04 | CON-LEG101-SB-3740 | 7d |
| CON-LEG101-SB-3790 |  | Pre-qualification and Material Approval for Bridge Bearings | 6d | 2026-01-05 | 2026-01-11 | CON-LEG101-SB-3780 | 7d |
|  | 6 | **Expansion Joints** |  | 2025-12-30 | 2026-01-11 |  |  |
| CON-LEG101-SB-3800 |  | Pre-qualification and Material Submittal for Expansion Joints | 5d | 2025-12-30 | 2026-01-04 | CON-LEG101-SB-3780 SS | 7d |
| CON-LEG101-SB-3810 |  | Pre-qualification and Material Approval for Expansion Joints | 6d | 2026-01-05 | 2026-01-11 | CON-LEG101-SB-3800 | 7d |
|  | 4 | **New Jersey** |  | 2025-12-30 | 2026-01-11 |  |  |
| CON-LEG101-SB-3760 |  | Pre-qualification and Material Submittal for New Jersey | 5d | 2025-12-30 | 2026-01-04 | CON-LEG101-SB-3800 SS | 7d |
| CON-LEG101-SB-3770 |  | Pre-qualification and Material Approval for New Jersey | 6d | 2026-01-05 | 2026-01-11 | CON-LEG101-SB-3760 | 7d |
|  | 7 | **Guard Rail** |  | 2025-12-30 | 2026-01-11 |  |  |
| CON-LEG101-SB-3820 |  | Pre-qualification and Material Submittal for Guard Rail | 5d | 2025-12-30 | 2026-01-04 | CON-LEG101-SB-3760 SS | 7d |
| CON-LEG101-SB-3830 |  | Pre-qualification and Material Approval for Guard Rail | 6d | 2026-01-05 | 2026-01-11 | CON-LEG101-SB-3820 | 7d |
|  | 8 | **GRP Panel** |  | 2025-12-30 | 2026-01-11 |  |  |
| CON-LEG101-SB-3840 |  | Pre-qualification and Material Submittal for GRP Panel | 5d | 2025-12-30 | 2026-01-04 | CON-LEG101-SB-3820 SS | 7d |
| CON-LEG101-SB-3850 |  | Pre-qualification and Material Approval for GRP Panel | 6d | 2026-01-05 | 2026-01-11 | CON-LEG101-SB-3840 | 7d |
|  | 9 | **Logo MODON** |  | 2025-12-30 | 2026-01-11 |  |  |
| CON-LEG101-SB-3860 |  | Pre-qualification and Material Submittal for Logo MODON | 5d | 2025-12-30 | 2026-01-04 | CON-LEG101-SB-3840 SS | 7d |
| CON-LEG101-SB-3870 |  | Pre-qualification and Material Approval for Logo MODON | 6d | 2026-01-05 | 2026-01-11 | CON-LEG101-SB-3860 | 7d |
|  | 10 | **Bridge Gully (Scupper) drainage** |  | 2025-12-30 | 2026-01-11 |  |  |
| CON-LEG101-SB-3880 |  | Pre-qualification and Material Submittal for Bridge Gully (Scupper) drainage | 5d | 2025-12-30 | 2026-01-04 | CON-LEG101-SB-3780 SS | 7d |
| CON-LEG101-SB-3890 |  | Pre-qualification and Material Approval for Bridge Gully (Scupper) drainage | 6d | 2026-01-05 | 2026-01-11 | CON-LEG101-SB-3880 | 7d |
|  | 10 | **Fence & Gates** |  | 2025-12-20 | 2026-01-10 |  |  |
|  | 1 | **Metal Fence** |  | 2025-12-20 | 2025-12-31 |  |  |
| CON-LEG101-SB-2270 |  | Pre-qualification and Material Submittal for Metal Fence | 5d | 2025-12-20 | 2025-12-24 | CON-LEG101-MB-1000, CON-LEG101-MS-1090 SS | 0d |
| CON-LEG101-SB-2310 |  | Pre-qualification and Material Approval for Metal Fence | 6d | 2025-12-25 | 2025-12-31 | CON-LEG101-SB-2270 | 0d |
|  | 2 | **Gates** |  | 2025-12-23 | 2026-01-04 |  |  |
| CON-LEG101-SB-2290 |  | Pre-qualification and Material Submittal for Gates | 5d | 2025-12-23 | 2025-12-28 | CON-LEG101-SB-2270 SS+3d | 8d |
| CON-LEG101-SB-2330 |  | Pre-qualification and Material Approval for Gates | 6d | 2025-12-29 | 2026-01-04 | CON-LEG101-SB-2290 | 13d |
|  | 3 | **Paint On Cement Plaster** |  | 2025-12-29 | 2026-01-10 |  |  |
| CON-LEG101-SB-3900 |  | Pre-qualification and Material Submittal for Paint On Cement Plaster | 5d | 2025-12-29 | 2026-01-03 | CON-LEG101-SB-2290 | 8d |
| CON-LEG101-SB-3910 |  | Pre-qualification and Material Approval for Paint On Cement Plaster | 6d | 2026-01-04 | 2026-01-10 | CON-LEG101-SB-3900 | 8d |
|  | 12 | **Telecommunications** |  | 2025-12-20 | 2026-01-19 |  |  |
|  | 2 | **Pipe for the Duct** |  | 2025-12-20 | 2026-01-03 |  |  |
| CON-LEG101-SB-3340 |  | Pre-qualification and Material Submittal for Pipe for the Duct | 7d | 2025-12-20 | 2025-12-27 | CON-LEG101-TP-1330, CON-LEG101-MB-1000 | 0d |
| CON-LEG101-SB-3350 |  | Pre-qualification and Material Approval for Pipe for the Duct | 6d | 2025-12-28 | 2026-01-03 | CON-LEG101-SB-3340 | 14d |
|  | 5 | **Low Voltage Cables** |  | 2025-12-28 | 2026-01-10 |  |  |
| CON-LEG101-SB-3380 |  | Pre-qualification and Material Submittal for Low Voltage Cables | 6d | 2025-12-28 | 2026-01-03 | CON-LEG101-SB-3340 | 0d |
| CON-LEG101-SB-3390 |  | Pre-qualification and Material Approval for Low Voltage Cables | 6d | 2026-01-04 | 2026-01-10 | CON-LEG101-SB-3380 | 8d |
|  | 4 | **Manhole** |  | 2026-01-04 | 2026-01-19 |  |  |
| CON-LEG101-SB-3360 |  | Pre-qualification and Material Submittal for Manhole | 8d | 2026-01-04 | 2026-01-12 | CON-LEG101-SB-3380 | 0d |
| CON-LEG101-SB-3370 |  | Pre-qualification and Material Approval for Manhole | 6d | 2026-01-13 | 2026-01-19 | CON-LEG101-SB-3360 | 0d |
|  | 4 | **Electrical Network** |  | 2025-12-20 | 2026-01-12 |  |  |
|  | 2 | **Pipe for the Duct** |  | 2025-12-20 | 2026-01-03 |  |  |
| CON-LEG101-SB-1240 |  | Pre-qualification and Material Submittal for Pipe for the Duct | 7d | 2025-12-20 | 2025-12-27 | CON-LEG101-SB-3340 SS | 0d |
| CON-LEG101-SB-1270 |  | Pre-qualification and Material Approval for Pipe for the Duct | 6d | 2025-12-28 | 2026-01-03 | CON-LEG101-SB-1240 | 8d |
|  | 5 | **Low Voltage Cables** |  | 2025-12-28 | 2026-01-06 |  |  |
| CON-LEG101-SB-1780 |  | Pre-qualification and Material Submittal for Low Voltage Cables | 3d | 2025-12-28 | 2025-12-30 | CON-LEG101-SB-1240 | 0d |
| CON-LEG101-SB-1790 |  | Pre-qualification and Material Approval for Low Voltage Cables | 6d | 2025-12-31 | 2026-01-06 | CON-LEG101-SB-1780 | 11d |
|  | 6 | **Lighting poles** |  | 2025-12-31 | 2026-01-12 |  |  |
| CON-LEG101-SB-1820 |  | Pre-qualification and Material Submittal for Lighting poles | 5d | 2025-12-31 | 2026-01-05 | CON-LEG101-SB-1780 | 6d |
| CON-LEG101-SB-1830 |  | Pre-qualification and Material Approval for Lighting poles | 6d | 2026-01-06 | 2026-01-12 | CON-LEG101-SB-1820 | 6d |
|  | 7 | **Street Lighting Luminaire** |  | 2025-12-31 | 2026-01-12 |  |  |
| CON-LEG101-SB-1860 |  | Pre-qualification and Material Submittal for Street Lighting Luminaire | 5d | 2025-12-31 | 2026-01-05 | CON-LEG101-SB-1820 SS | 6d |
| CON-LEG101-SB-1870 |  | Pre-qualification and Material Approval for Street Lighting Luminaire | 6d | 2026-01-06 | 2026-01-12 | CON-LEG101-SB-1860 | 6d |
|  | 11 | **Medium Voltage Cable** |  | 2025-12-31 | 2026-01-12 |  |  |
| CON-LEG101-SB-1660 |  | Pre-qualification and Material Submittal for Medium Voltage Cable | 5d | 2025-12-31 | 2026-01-05 | CON-LEG101-SB-1860 SS | 6d |
| CON-LEG101-SB-1670 |  | Pre-qualification and Material Approval for Medium Voltage Cable | 6d | 2026-01-06 | 2026-01-12 | CON-LEG101-SB-1660 | 6d |

| ID | WBS | Task | Duration | Start | Finish | Predecessors | Total float |
| --- | --- | --- | --- | --- | --- | --- | --- |
|  | 3 | **Cable Termination & Joints** |  | 2025-12-31 | 2026-01-10 |  |  |
| CON-LEG101-SB-1300 |  | Pre-qualification and Material Submittal for Cable Termination & Joints | 3d | 2025-12-31 | 2026-01-03 | CON-LEG101-SB-1660 SS | 8d |
| CON-LEG101-SB-1310 |  | Pre-qualification and Material Approval for Cable Termination & Joints | 6d | 2026-01-04 | 2026-01-10 | CON-LEG101-SB-1300 | 8d |
|  | 13 | **Ring Main Unit** |  | 2025-12-31 | 2026-01-10 |  |  |
| CON-LEG101-SB-1700 |  | Pre-qualification and Material Submittal for Ring Main Unit | 3d | 2025-12-31 | 2026-01-03 | CON-LEG101-SB-1300 SS | 8d |
| CON-LEG101-SB-1710 |  | Pre-qualification and Material Approval for Ring Main Unit | 6d | 2026-01-04 | 2026-01-10 | CON-LEG101-SB-1700 | 8d |
|  | 14 | **Street Lighting Sub-station** |  | 2025-12-31 | 2026-01-10 |  |  |
| CON-LEG101-SB-1740 |  | Pre-qualification and Material Submittal for Street Lighting Sub-station | 3d | 2025-12-31 | 2026-01-03 | CON-LEG101-SB-1700 SS | 8d |
| CON-LEG101-SB-1750 |  | Pre-qualification and Material Approval for Street Lighting Sub-station | 6d | 2026-01-04 | 2026-01-10 | CON-LEG101-SB-1740 | 8d |
|  | 4 | **Earthing System** |  | 2025-12-31 | 2026-01-10 |  |  |
| CON-LEG101-SB-1340 |  | Pre-qualification and Material Submittal for Earthing System | 3d | 2025-12-31 | 2026-01-03 | CON-LEG101-SB-1740 SS | 8d |
| CON-LEG101-SB-1350 |  | Pre-qualification and Material Approval for Earthing System | 6d | 2026-01-04 | 2026-01-10 | CON-LEG101-SB-1340 | 8d |
|  | 1 | **Lighting panels** |  | 2025-12-31 | 2026-01-10 |  |  |
| CON-LEG101-SB-2390 |  | Pre-qualification and Material Submittal for Lighting panels | 3d | 2025-12-31 | 2026-01-03 | CON-LEG101-SB-1340 SS | 8d |
| CON-LEG101-SB-2430 |  | Pre-qualification and Material Approval for Lighting panels | 6d | 2026-01-04 | 2026-01-10 | CON-LEG101-SB-2390 | 8d |
|  | 8 | **System for KWHM** |  | 2025-12-31 | 2026-01-10 |  |  |
| CON-LEG101-SB-1900 |  | Pre-qualification and Material Submittal for System for KWHM | 3d | 2025-12-31 | 2026-01-03 | CON-LEG101-SB-2390 SS | 8d |
| CON-LEG101-SB-1910 |  | Pre-qualification and Material Approval for System for KWHM | 6d | 2026-01-04 | 2026-01-10 | CON-LEG101-SB-1900 | 8d |
|  | 9 | **Feeder Piller** |  | 2025-12-31 | 2026-01-10 |  |  |
| CON-LEG101-SB-1940 |  | Pre-qualification and Material Submittal for Feeder Piller | 3d | 2025-12-31 | 2026-01-03 | CON-LEG101-SB-1900 SS | 8d |
| CON-LEG101-SB-1950 |  | Pre-qualification and Material Approval for Feeder Piller | 6d | 2026-01-04 | 2026-01-10 | CON-LEG101-SB-1940 | 8d |
|  | 10 | **Street Lighting Panels** |  | 2025-12-31 | 2026-01-10 |  |  |
| CON-LEG101-SB-1980 |  | Pre-qualification and Material Submittal for Street Lighting Panels | 3d | 2025-12-31 | 2026-01-03 | CON-LEG101-SB-1940 SS | 8d |
| CON-LEG101-SB-1990 |  | Pre-qualification and Material Approval for Street Lighting Panels | 6d | 2026-01-04 | 2026-01-10 | CON-LEG101-SB-1980 | 8d |
|  | 8 | **CCTV feeding system and GSM** |  | 2025-12-28 | 2026-01-19 |  |  |
|  | 2 | **Fiber Optic Patch Panel 12 port** |  | 2025-12-28 | 2026-01-10 |  |  |
| CON-LEG101-SB-3400 |  | Pre-qualification and Material Submittal for Fiber Optic Patch Panel 12 port | 6d | 2025-12-28 | 2026-01-03 | CON-LEG101-SB-1780 SS | 0d |
| CON-LEG101-SB-3410 |  | Pre-qualification and Material Approval for Fiber Optic Patch Panel 12 port | 6d | 2026-01-04 | 2026-01-10 | CON-LEG101-SB-3400 | 8d |
|  | 5 | **Modular Industrial Switches for main pole** |  | 2026-01-04 | 2026-01-13 |  |  |
| CON-LEG101-SB-3500 |  | Pre-qualification and Material Submittal for Modular Industrial Switches for main pole | 3d | 2026-01-04 | 2026-01-06 | CON-LEG101-SB-3400 | 0d |
| CON-LEG101-SB-3510 |  | Pre-qualification and Material Approval for Modular Industrial Switches for main pole | 6d | 2026-01-07 | 2026-01-13 | CON-LEG101-SB-3500 | 5d |
|  | 11 | **8POE ports Industrial Switches for remote poles** |  | 2026-01-07 | 2026-01-19 |  |  |
| CON-LEG101-SB-3440 |  | Pre-qualification and Material Submittal for 8POE ports Industrial Switches for remote poles | 5d | 2026-01-07 | 2026-01-12 | CON-LEG101-SB-3500 | 0d |
| CON-LEG101-SB-3450 |  | Pre-qualification and Material Approval for 8POE ports Industrial Switches for remote poles | 6d | 2026-01-13 | 2026-01-19 | CON-LEG101-SB-3440 | 0d |
|  | 3 | **Core Switch** |  | 2026-01-07 | 2026-01-19 |  |  |
| CON-LEG101-SB-3420 |  | Pre-qualification and Material Submittal for Core Switch | 5d | 2026-01-07 | 2026-01-12 | CON-LEG101-SB-3440 SS | 0d |
| CON-LEG101-SB-3430 |  | Pre-qualification and Material Approval for Core Switch | 6d | 2026-01-13 | 2026-01-19 | CON-LEG101-SB-3420 | 0d |
|  | 13 | **Access Switch 48 port** |  | 2026-01-07 | 2026-01-19 |  |  |
| CON-LEG101-SB-3460 |  | Pre-qualification and Material Submittal for Access Switch 48 port | 5d | 2026-01-07 | 2026-01-12 | CON-LEG101-SB-3420 SS | 0d |
| CON-LEG101-SB-3470 |  | Pre-qualification and Material Approval for Access Switch 48 port | 6d | 2026-01-13 | 2026-01-19 | CON-LEG101-SB-3460 | 0d |
|  | 14 | **Server** |  | 2026-01-07 | 2026-01-19 |  |  |
| CON-LEG101-SB-3480 |  | Pre-qualification and Material Submittal for Server | 5d | 2026-01-07 | 2026-01-12 | CON-LEG101-SB-3460 SS | 0d |
| CON-LEG101-SB-3490 |  | Pre-qualification and Material Approval for Server | 6d | 2026-01-13 | 2026-01-19 | CON-LEG101-SB-3480 | 0d |
|  | 6 | **Stand rack 42U- 19"** |  | 2026-01-07 | 2026-01-19 |  |  |
| CON-LEG101-SB-3520 |  | Pre-qualification and Material Submittal for Stand rack 42U- 19" | 5d | 2026-01-07 | 2026-01-12 | CON-LEG101-SB-3480 SS | 0d |
| CON-LEG101-SB-3530 |  | Pre-qualification and Material Approval for Stand rack 42U- 19" | 6d | 2026-01-13 | 2026-01-19 | CON-LEG101-SB-3520 | 0d |
|  | 1 | **IP Outdoor CCTV POE Camera,5 MP, Metal Housing** |  | 2026-01-07 | 2026-01-19 |  |  |
| CON-LEG101-SB-3620 |  | Pre-qualification and Material Submittal for IP Outdoor CCTV POE Camera,5 MP, Metal Housing | 5d | 2026-01-07 | 2026-01-12 | CON-LEG101-SB-3520 SS | 0d |
| CON-LEG101-SB-3630 |  | Pre-qualification and Material Approval for IP Outdoor CCTV POE Camera,5 MP, Metal Housing | 6d | 2026-01-13 | 2026-01-19 | CON-LEG101-SB-3620 | 0d |
|  | 7 | **Outdoor PTZ with IR, HDTV 1080 and 31x optical, 12x digital** |  | 2026-01-07 | 2026-01-19 |  |  |
| CON-LEG101-SB-3540 |  | Pre-qualification and Material Submittal for Outdoor PTZ with IR, HDTV 1080 and 31x optical, 12x digital | 5d | 2026-01-07 | 2026-01-12 | CON-LEG101-SB-3620 SS | 0d |
| CON-LEG101-SB-3550 |  | Pre-qualification and Material Approval for Outdoor PTZ with IR, HDTV 1080 and 31x optical, 12x digital | 6d | 2026-01-13 | 2026-01-19 | CON-LEG101-SB-3540 | 0d |
|  | 8 | **Security workstation with 1 x 19" LED screen** |  | 2026-01-07 | 2026-01-19 |  |  |
| CON-LEG101-SB-3560 |  | Pre-qualification and Material Submittal for Security workstation with 1 x 19" LED screen | 5d | 2026-01-07 | 2026-01-12 | CON-LEG101-SB-3540 SS | 0d |
| CON-LEG101-SB-3570 |  | Pre-qualification and Material Approval for Security workstation with 1 x 19" LED screen | 6d | 2026-01-13 | 2026-01-19 | CON-LEG101-SB-3560 | 0d |
|  | 9 | **LED Screen 43" (24/7 operation) with Ethernet decoders** |  | 2026-01-07 | 2026-01-19 |  |  |
| CON-LEG101-SB-3580 |  | Pre-qualification and Material Submittal for LED Screen 43" (24/7 operation) with Ethernet decoders | 5d | 2026-01-07 | 2026-01-12 | CON-LEG101-SB-3560 SS | 0d |
| CON-LEG101-SB-3590 |  | Pre-qualification and Material Approval for LED Screen 43" (24/7 operation) with Ethernet decoders | 6d | 2026-01-13 | 2026-01-19 | CON-LEG101-SB-3580 | 0d |
|  | 10 | **Network Video Recorder 4k 64 Channel** |  | 2026-01-07 | 2026-01-19 |  |  |
| CON-LEG101-SB-3600 |  | Pre-qualification and Material Submittal for Network Video Recorder 4k 64 Channel | 5d | 2026-01-07 | 2026-01-12 | CON-LEG101-SB-3580 SS | 0d |
| CON-LEG101-SB-3610 |  | Pre-qualification and Material Approval for Network Video Recorder 4k 64 Channel | 6d | 2026-01-13 | 2026-01-19 | CON-LEG101-SB-3600 | 0d |
|  | 12 | **Keypad** |  | 2026-01-07 | 2026-01-19 |  |  |
| CON-LEG101-SB-3640 |  | Pre-qualification and Material Submittal for Keypad | 5d | 2026-01-07 | 2026-01-12 | CON-LEG101-SB-3600 SS | 0d |
| CON-LEG101-SB-3650 |  | Pre-qualification and Material Approval for Keypad | 6d | 2026-01-13 | 2026-01-19 | CON-LEG101-SB-3640 | 0d |
|  | 15 | **Horizontal Power Distribution Unit (min 8 outlets)** |  | 2026-01-07 | 2026-01-19 |  |  |
| CON-LEG101-SB-3660 |  | Pre-qualification and Material Submittal for Horizontal Power Distribution Unit (min 8 outlets) | 5d | 2026-01-07 | 2026-01-12 | CON-LEG101-SB-3640 SS | 0d |
| CON-LEG101-SB-3670 |  | Pre-qualification and Material Approval for Horizontal Power Distribution Unit (min 8 outlets) | 6d | 2026-01-13 | 2026-01-19 | CON-LEG101-SB-3660 | 0d |
|  | 16 | **35 Meters mono pole with Double Platform for Access Points** |  | 2026-01-07 | 2026-01-19 |  |  |
| CON-LEG101-SB-3680 |  | Pre-qualification and Material Submittal for 35 Meters mono pole with Double Platform for Access Points | 5d | 2026-01-07 | 2026-01-12 | CON-LEG101-SB-3660 SS | 0d |
| CON-LEG101-SB-3690 |  | Pre-qualification and Material Approval for 35 Meters mono pole with Double Platform for Access Points | 6d | 2026-01-13 | 2026-01-19 | CON-LEG101-SB-3680 | 0d |

| ID | WBS | Task | Duration | Start | Finish | Predecessors | Total float |
| --- | --- | --- | --- | --- | --- | --- | --- |
|  | 17 | **25 Meters pole for CCTV Cameras** |  | 2026-01-07 | 2026-01-19 |  |  |
| CON-LEG101-SB-3700 |  | Pre-qualification and Material Submittal for 25 Meters pole for CCTV Cameras | 5d | 2026-01-07 | 2026-01-12 | CON-LEG101-SB-3680 SS | 0d |
| CON-LEG101-SB-3710 |  | Pre-qualification and Material Approval for 25 Meters pole for CCTV Cameras | 6d | 2026-01-13 | 2026-01-19 | CON-LEG101-SB-3700 | 0d |
|  | 18 | **Short Range wireless point to point wireless bridge** |  | 2026-01-07 | 2026-01-19 |  |  |
| CON-LEG101-SB-3720 |  | Pre-qualification and Material Submittal for Short Range wireless point to point wireless bridge | 5d | 2026-01-07 | 2026-01-12 | CON-LEG101-SB-3700 SS | 0d |
| CON-LEG101-SB-3730 |  | Pre-qualification and Material Approval for Short Range wireless point to point wireless bridge | 6d | 2026-01-13 | 2026-01-19 | CON-LEG101-SB-3720 | 0d |
|  | 11 | **Irrigation Works** |  | 2025-12-30 | 2026-01-15 |  |  |
|  | 2 | **16 mm dia (O.D.) linear low density polyethylene tubing** |  | 2025-12-30 | 2026-01-11 |  |  |
| CON-LEG101-SB-3930 |  | Pre-qualification and Material Submittal for Steel Fence for 16 mm dia (O.D.) linear low density polyethylene tubing | 5d | 2025-12-30 | 2026-01-04 | CON-LEG101-SB-1420 | 3d |
| CON-LEG101-SB-3950 |  | Pre-qualification and Material Approval for Steel Fence for 16 mm dia (O.D.) linear low density polyethylene tubing | 6d | 2026-01-05 | 2026-01-11 | CON-LEG101-SB-3930 | 7d |
|  | 3 | **Irrigation Controller** |  | 2026-01-01 | 2026-01-13 |  |  |
| CON-LEG101-SB-3960 |  | Pre-qualification and Material Submittal for Steel Fence for Irrigation Controller | 5d | 2026-01-01 | 2026-01-06 | CON-LEG101-SB-3930 SS+2d | 3d |
| CON-LEG101-SB-3970 |  | Pre-qualification and Material Approval for Steel Fence for Irrigation Controller | 6d | 2026-01-07 | 2026-01-13 | CON-LEG101-SB-3960 | 5d |
|  | 4 | **Single station decoder** |  | 2026-01-03 | 2026-01-14 |  |  |
| CON-LEG101-SB-3980 |  | Pre-qualification and Material Submittal for Steel Fence for Single station decoder | 5d | 2026-01-03 | 2026-01-07 | CON-LEG101-SB-3960 SS+1d | 3d |
| CON-LEG101-SB-3990 |  | Pre-qualification and Material Approval for Steel Fence for Single station decoder | 6d | 2026-01-08 | 2026-01-14 | CON-LEG101-SB-3980 | 4d |
|  | 5 | **Decoder cables 12 AWG** |  | 2026-01-04 | 2026-01-15 |  |  |
| CON-LEG101-SB-4000 |  | Pre-qualification and Material Submittal for Steel Fence for Decoder cables 12 AWG | 5d | 2026-01-04 | 2026-01-08 | CON-LEG101-SB-3980 SS+1d | 3d |
| CON-LEG101-SB-4010 |  | Pre-qualification and Material Approval for Steel Fence for Decoder cables 12 AWG | 6d | 2026-01-10 | 2026-01-15 | CON-LEG101-SB-4000 | 3d |
|  | 1 | **Flush valve** |  | 2026-01-04 | 2026-01-15 |  |  |
| CON-LEG101-SB-3920 |  | Pre-qualification and Material Submittal for Steel Gate for Flush valve | 5d | 2026-01-04 | 2026-01-08 | CON-LEG101-SB-4000 SS | 3d |
| CON-LEG101-SB-3940 |  | Pre-qualification and Material Approval for Steel Gate for Flush valve | 6d | 2026-01-10 | 2026-01-15 | CON-LEG101-SB-3920 | 3d |
|  | 9 | **Landscape Works** |  | 2025-12-30 | 2026-01-12 |  |  |
|  | 1 | **HDPE Pipes** |  | 2025-12-30 | 2026-01-08 |  |  |
| CON-LEG101-SB-4020 |  | Pre-qualification and Material Submittal for HDPE Pipes | 3d | 2025-12-30 | 2026-01-01 | CON-LEG101-SB-3930 SS | 6d |
| CON-LEG101-SB-4040 |  | Pre-qualification and Material Approval for HDPE Pipes | 6d | 2026-01-03 | 2026-01-08 | CON-LEG101-SB-4020 | 9d |
|  | 7 | **Decoder Cables** |  | 2026-01-03 | 2026-01-12 |  |  |
| CON-LEG101-SB-4140 |  | Pre-qualification and Material Submittal for Decoder Cables | 3d | 2026-01-03 | 2026-01-05 | CON-LEG101-SB-4020 | 6d |
| CON-LEG101-SB-4150 |  | Pre-qualification and Material Approval for Decoder Cables | 6d | 2026-01-06 | 2026-01-12 | CON-LEG101-SB-4140 | 6d |
|  | 9 | **Curbs and edging** |  | 2026-01-03 | 2026-01-12 |  |  |
| CON-LEG101-SB-4180 |  | Pre-qualification and Material Submittal for Curbs and edging | 3d | 2026-01-03 | 2026-01-05 | CON-LEG101-SB-4140 SS | 6d |
| CON-LEG101-SB-4190 |  | Pre-qualification and Material Approval for Curbs and edging | 6d | 2026-01-06 | 2026-01-12 | CON-LEG101-SB-4180 | 6d |
|  | 2 | **Electrical Solenoid Valve** |  | 2026-01-03 | 2026-01-12 |  |  |
| CON-LEG101-SB-4030 |  | Pre-qualification and Material Submittal for Electrical Solenoid Valve | 3d | 2026-01-03 | 2026-01-05 | CON-LEG101-SB-4140 SS | 6d |
| CON-LEG101-SB-4050 |  | Pre-qualification and Material Approval for Electrical Solenoid Valve | 6d | 2026-01-06 | 2026-01-12 | CON-LEG101-SB-4030 | 6d |
|  | 3 | **Quick coupler valve** |  | 2026-01-03 | 2026-01-12 |  |  |
| CON-LEG101-SB-4060 |  | Pre-qualification and Material Submittal for Quick coupler valve | 3d | 2026-01-03 | 2026-01-05 | CON-LEG101-SB-4030 SS | 6d |
| CON-LEG101-SB-4070 |  | Pre-qualification and Material Approval for Quick coupler valve | 6d | 2026-01-06 | 2026-01-12 | CON-LEG101-SB-4060 | 6d |
|  | 4 | **Flush valve** |  | 2026-01-03 | 2026-01-12 |  |  |
| CON-LEG101-SB-4080 |  | Pre-qualification and Material Submittal for Flush valve | 3d | 2026-01-03 | 2026-01-05 | CON-LEG101-SB-4060 SS | 6d |
| CON-LEG101-SB-4090 |  | Pre-qualification and Material Approval for Flush valve | 6d | 2026-01-06 | 2026-01-12 | CON-LEG101-SB-4080 | 6d |
|  | 5 | **Irrigation controller** |  | 2026-01-03 | 2026-01-12 |  |  |
| CON-LEG101-SB-4100 |  | Pre-qualification and Material Submittal for Irrigation controller | 3d | 2026-01-03 | 2026-01-05 | CON-LEG101-SB-4080 SS | 6d |
| CON-LEG101-SB-4110 |  | Pre-qualification and Material Approval for Irrigation controller | 6d | 2026-01-06 | 2026-01-12 | CON-LEG101-SB-4100 | 6d |
|  | 6 | **Decoder for valve** |  | 2026-01-03 | 2026-01-12 |  |  |
| CON-LEG101-SB-4120 |  | Pre-qualification and Material Submittal for Decoder for valve | 3d | 2026-01-03 | 2026-01-05 | CON-LEG101-SB-4100 SS | 6d |
| CON-LEG101-SB-4130 |  | Pre-qualification and Material Approval for Decoder for valve | 6d | 2026-01-06 | 2026-01-12 | CON-LEG101-SB-4120 | 6d |
|  | 8 | **Shrubs And Ground Cover** |  | 2026-01-03 | 2026-01-12 |  |  |
| CON-LEG101-SB-4160 |  | Pre-qualification and Material Submittal for agricultural soil | 3d | 2026-01-03 | 2026-01-05 | CON-LEG101-SB-4120 SS | 6d |
| CON-LEG101-SB-4170 |  | Pre-qualification and Material Approval for agricultural soil | 6d | 2026-01-06 | 2026-01-12 | CON-LEG101-SB-4160 | 6d |
|  | 4 | **Procurement** |  | 2025-12-28 | 2027-09-14 |  |  |
|  | 2 | **Short Lead Item** |  | 2025-12-28 | 2027-04-06 |  |  |
|  | 1 | **Road Works - Civil** |  | 2025-12-28 | 2027-04-06 |  |  |
|  | 1 | **Steel Reinforcement** |  | 2025-12-28 | 2026-01-24 |  |  |
| CON-LEG101-PR-1390 |  | PO for Steel Reinforcement | 3d | 2025-12-28 | 2025-12-30 | CON-LEG101-SB-4270 | 0d |
| CON-LEG101-PR-1410 |  | Material Delivery for Steel Reinforcement | 21d | 2025-12-31 | 2026-01-24 | CON-LEG101-PR-1390 | 0d |
|  | 2 | **Ready Mixed Concrete** |  | 2025-12-31 | 2026-02-17 |  |  |
| CON-LEG101-PR-1420 |  | PO for Ready Mixed Concrete | 5d | 2025-12-31 | 2026-01-05 | CON-LEG101-SB-4290 | 16d |
| CON-LEG101-PR-1430 |  | Material Delivery for Ready Mixed Concrete | 21d | 2026-01-25 | 2026-02-17 | CON-LEG101-PR-1410, CON-LEG101-PR-1420 | 0d |
|  | 4 | **Backfilling Materials** |  | 2026-01-06 | 2026-02-26 |  |  |
| CON-LEG101-PR-3990 |  | PO for Backfilling Materials | 5d | 2026-01-06 | 2026-01-11 | CON-LEG101-MS-1090 SS, CON-LEG101-MB-1160, CON-LEG101-PR-1420 | 20d |
| CON-LEG101-PR-4000 |  | Material Delivery for Backfilling Materials | 21d | 2026-02-02 | 2026-02-26 | CON-LEG101-PR-3990, CON-LEG101-PR-1430 SS+7d, CON-LEG101-MS-1100 | 7d |
|  | 5 | **Aggregate Base Course** |  | 2026-01-12 | 2026-06-14 |  |  |
| CON-LEG101-PR-1470 |  | PO for Aggregate Base Course | 5d | 2026-01-12 | 2026-01-17 | CON-LEG101-SB-1030, CON-LEG101-PR-3990 | 20d |
| CON-LEG101-PR-1490 |  | Material Delivery for Aggregate Base Course | 21d | 2026-05-17 | 2026-06-14 | CON-LEG101-PR-1470, CON-LEG101-PR-2570, CON-LEG101-PR-2560 | 10d |
|  | 7 | **Precast Concrete Kerb** |  | 2026-01-12 | 2026-12-06 |  |  |
| CON-LEG101-PR-1520 |  | PO for Precast Concrete Kerb | 5d | 2026-01-12 | 2026-01-17 | CON-LEG101-SB-1110 | 20d |
| CON-LEG101-PR-1540 |  | Material Delivery for Precast Concrete Kerb | 21d | 2026-11-12 | 2026-12-06 | CON-LEG101-PR-1520, CON-LEG101-PR-1510, CON-LEG101-LR-7980 | 16d |
|  | 8 | **Interlocking Block Pavers** |  | 2026-01-12 | 2026-12-06 |  |  |
| CON-LEG101-PR-1550 |  | PO for Interlocking Block Pavers | 5d | 2026-01-12 | 2026-01-17 | CON-LEG101-SB-1150 | 20d |

| ID | WBS | Task | Duration | Start | Finish | Predecessors | Total float |
| --- | --- | --- | --- | --- | --- | --- | --- |
| CON-LEG101-PR-1570 |  | Material Delivery for Interlocking Block Pavers | 21d | 2026-11-12 | 2026-12-06 | CON-LEG101-PR-1550, CON-LEG101-PR-1540 SS | 16d |
|  | 3 | **Water Proofing** |  | 2026-01-06 | 2026-03-15 |  |  |
| CON-LEG101-PR-1440 |  | PO for Water Proofing | 5d | 2026-01-06 | 2026-01-11 | CON-LEG101-SB-4310 | 20d |
| CON-LEG101-PR-1460 |  | Material Delivery for Water Proofing | 21d | 2026-02-18 | 2026-03-15 | CON-LEG101-PR-1440, CON-LEG101-PR-1410, CON-LEG101-PR-1430 | 3d |
|  | 10 | **Handicap ramp** |  | 2026-01-12 | 2027-03-30 |  |  |
| CON-LEG101-PR-2580 |  | PO for Handicap ramp | 5d | 2026-01-12 | 2026-01-17 | CON-LEG101-SB-2370, CON-LEG101-PR-1440 | 20d |
| CON-LEG101-PR-2600 |  | Material Delivery for Handicap ramp | 15d | 2027-03-14 | 2027-03-30 | CON-LEG101-PR-2580, CON-LEG101-PR-1630 SS, CON-LEG101-PR-1600 SS | 14d |
|  | 9 | **Pavement Markings** |  | 2026-01-12 | 2027-04-04 |  |  |
| CON-LEG101-PR-1580 |  | PO for Pavement Markings | 5d | 2026-01-12 | 2026-01-17 | CON-LEG101-SB-1190 | 20d |
| CON-LEG101-PR-1600 |  | Material Delivery for Pavement Markings | 15d | 2027-03-14 | 2027-03-30 | CON-LEG101-PR-1580, CON-LEG101-PR-1510 SS+7d, CON-LEG101-PR-1530 SS | 14d |
| CON-LEG101-PR-2070 |  | Staging Time for Pavement Markings | 4d | 2027-03-31 | 2027-04-04 | CON-LEG101-PR-1600, CON-LEG101-PR-2600 | 14d |
|  | 6 | **Bituminous Base & Wearing Course** |  | 2026-01-12 | 2027-04-06 |  |  |
| CON-LEG101-PR-1500 |  | PO for Bituminous Base & Wearing Course | 5d | 2026-01-12 | 2026-01-17 | CON-LEG101-SB-1070 | 20d |
| CON-LEG101-PR-1510 |  | Material Delivery for Bituminous Base Course | 21d | 2026-06-15 | 2026-07-08 | CON-LEG101-PR-1490, CON-LEG101-PR-1500 | 25d |
| CON-LEG101-PR-1530 |  | Material Delivery for Wearing Course | 21d | 2027-03-14 | 2027-04-06 | CON-LEG101-PR-1510, CON-LEG101-LR-6180 | 14d |
|  | 1 | **Long Lead Item** |  | 2025-12-30 | 2027-09-14 |  |  |
|  | 12 | **Sanitary Sewerage** |  | 2025-12-31 | 2026-05-16 |  |  |
|  | 1 | **GRP Pipes** |  | 2025-12-31 | 2026-05-05 |  |  |
| CON-LEG101-PR-1700 |  | PO for GRP Pipes for Sewer network | 3d | 2025-12-31 | 2026-01-03 | CON-LEG101-SB-1470 | 0d |
| CON-LEG101-PR-1710 |  | Material Fabrication for GRP Pipes for Sewer network | 75d | 2026-01-04 | 2026-04-06 | CON-LEG101-PR-1700 | 0d |
| CON-LEG101-PR-1720 |  | Material Delivery for GRP Pipes for Sewer network | 15d | 2026-04-07 | 2026-04-23 | CON-LEG101-PR-1710 | 0d |
| CON-LEG101-PR-2560 |  | Staging Time for GRP Pipes for Sewer network | 10d | 2026-04-25 | 2026-05-05 | CON-LEG101-PR-1720 | 0d |
|  | 2 | **Fiberglass Manholes** |  | 2026-01-08 | 2026-05-16 |  |  |
| CON-LEG101-PR-1730 |  | PO for Fiberglass Manholes for Sewer network | 5d | 2026-01-08 | 2026-01-13 | CON-LEG101-SB-1510, CON-LEG101-PR-1700 | 8d |
| CON-LEG101-PR-1740 |  | Material Fabrication for Fiberglass Manholes for Sewer network | 75d | 2026-01-14 | 2026-04-16 | CON-LEG101-PR-1730 | 8d |
| CON-LEG101-PR-1750 |  | Material Delivery for Fiberglass Manholes for Sewer network | 15d | 2026-04-18 | 2026-05-04 | CON-LEG101-PR-1740 | 8d |
| CON-LEG101-PR-2570 |  | Staging Time for Fiberglass Manholes for Sewer network | 10d | 2026-05-05 | 2026-05-16 | CON-LEG101-PR-1750 | 8d |
|  | 3 | **TSE Network** |  | 2026-01-06 | 2026-08-30 |  |  |
|  | 3 | **HDPE Pipe (PN 16)** |  | 2026-01-06 | 2026-06-08 |  |  |
| CON-LEG101-PR-1670 |  | PO for HDPE Pipe (PN 16) for TSE | 5d | 2026-01-06 | 2026-01-11 | CON-LEG101-SB-1430 | 18d |
| CON-LEG101-PR-1680 |  | Material Fabrication for HDPE Pipe (PN 16) for TSE | 75d | 2026-01-12 | 2026-04-14 | CON-LEG101-PR-1670 | 18d |
| CON-LEG101-PR-1690 |  | Material Delivery for HDPE Pipe (PN 16) for TSE | 15d | 2026-05-06 | 2026-05-23 | CON-LEG101-PR-2560, CON-LEG101-PR-1680 | 0d |
| CON-LEG101-PR-2590 |  | Staging Time for HDPE Pipe (PN 16) for TSE | 10d | 2026-05-24 | 2026-06-08 | CON-LEG101-PR-1690 | 0d |
|  | 1 | **Valves** |  | 2026-01-13 | 2026-07-07 |  |  |
| CON-LEG101-PR-1360 |  | PO for Valves for TSE | 5d | 2026-01-13 | 2026-01-18 | CON-LEG101-SB-2070 | 19d |
| CON-LEG101-PR-1370 |  | Material Fabrication for Valves for TSE | 90d | 2026-01-19 | 2026-05-09 | CON-LEG101-PR-1360 | 22d |
| CON-LEG101-PR-1380 |  | Material Delivery for Valves for TSE | 15d | 2026-06-09 | 2026-06-25 | CON-LEG101-PR-2590, CON-LEG101-PR-1370 | 0d |
| CON-LEG101-PR-1970 |  | Staging Time for Valves for TSE | 10d | 2026-06-27 | 2026-07-07 | CON-LEG101-PR-1380, CON-LEG101-PR-1490 | 0d |
|  | 2 | **Fire Hydrant** |  | 2026-01-12 | 2026-08-30 |  |  |
| CON-LEG101-PR-2440 |  | PO for Fire Hydrant | 3d | 2026-01-12 | 2026-01-14 | CON-LEG101-SB-2110 | 22d |
| CON-LEG101-PR-2450 |  | Material Fabrication for Fire Hydrant | 120d | 2026-02-28 | 2026-07-26 | CON-LEG101-PR-2440, CON-LEG101-PR-4000 | 20d |
| CON-LEG101-PR-2460 |  | Material Delivery for Fire Hydrant | 20d | 2026-07-27 | 2026-08-18 | CON-LEG101-PR-1970, CON-LEG101-PR-2450, CON-LEG101-PR-1510 | 20d |
| CON-LEG101-PR-2470 |  | Staging Time for Fire Hydrant | 10d | 2026-08-19 | 2026-08-30 | CON-LEG101-PR-2460 | 20d |
|  | 5 | **Stormwater Utilities** |  | 2025-12-30 | 2026-06-21 |  |  |
|  | 2 | **GRP Pipes** |  | 2025-12-31 | 2026-05-04 |  |  |
| CON-LEG101-PR-1790 |  | PO for GRP Pipes for Storm network | 3d | 2025-12-31 | 2026-01-03 | CON-LEG101-SB-1590 | 10d |
| CON-LEG101-PR-1800 |  | Material Fabrication for GRP Pipes for Storm network | 75d | 2026-01-04 | 2026-04-06 | CON-LEG101-PR-1790 | 10d |
| CON-LEG101-PR-1810 |  | Material Delivery for GRP Pipes for Storm network | 14d | 2026-04-07 | 2026-04-22 | CON-LEG101-PR-1800 | 10d |
| CON-LEG101-PR-2100 |  | Staging Time for GRP Pipes for Storm network | 10d | 2026-04-23 | 2026-05-04 | CON-LEG101-PR-1810 | 10d |
|  | 1 | **UPVC Pipes** |  | 2025-12-30 | 2026-05-04 |  |  |
| CON-LEG101-PR-1760 |  | PO for UPVC Pipes | 3d | 2025-12-30 | 2026-01-01 | CON-LEG101-SB-1550 | 10d |
| CON-LEG101-PR-1770 |  | Material Fabrication for UPVC Pipes | 75d | 2026-01-03 | 2026-04-05 | CON-LEG101-PR-1760 | 10d |
| CON-LEG101-PR-1780 |  | Material Delivery for UPVC Pipes | 15d | 2026-04-06 | 2026-04-22 | CON-LEG101-PR-1770 | 10d |
| CON-LEG101-PR-2110 |  | Staging Time for UPVC Pipes | 10d | 2026-04-23 | 2026-05-04 | CON-LEG101-PR-1780 | 10d |
|  | 6 | **Inlet Manholes** |  | 2026-01-05 | 2026-05-06 |  |  |
| CON-LEG101-PR-1820 |  | PO for Inlet Manholes for Storm network | 5d | 2026-01-05 | 2026-01-10 | CON-LEG101-SB-3330 | 13d |
| CON-LEG101-PR-1830 |  | Material Fabrication for Inlet Manholes for Storm network | 70d | 2026-01-11 | 2026-04-07 | CON-LEG101-PR-1820 | 13d |
| CON-LEG101-PR-1840 |  | Material Delivery for Inlet Manholes for Storm network | 15d | 2026-04-08 | 2026-04-25 | CON-LEG101-PR-1830 | 16d |
| CON-LEG101-PR-1980 |  | Staging Time for Inlet Manholes for Storm network | 10d | 2026-04-26 | 2026-05-06 | CON-LEG101-PR-1840 | 16d |
|  | 7 | **Concrete chambers** |  | 2026-01-13 | 2026-06-21 |  |  |
| CON-LEG101-PR-1850 |  | PO for Concrete chambers | 3d | 2026-01-13 | 2026-01-15 | CON-LEG101-PR-1820, CON-LEG101-SB-1630 | 21d |
| CON-LEG101-PR-1860 |  | Material Fabrication for Concrete chambers | 75d | 2026-01-28 | 2026-04-30 | CON-LEG101-PR-1830 SS+15d, CON-LEG101-PR-1850 | 13d |
| CON-LEG101-PR-1870 |  | Material Delivery for Concrete chambers | 20d | 2026-05-02 | 2026-05-24 | CON-LEG101-PR-1860 | 13d |
| CON-LEG101-PR-1990 |  | Staging Time for Concrete chambers | 20d | 2026-05-25 | 2026-06-21 | CON-LEG101-PR-1870 | 13d |
|  | 2 | **Public Water Utility Distribution** |  | 2026-01-07 | 2026-08-05 |  |  |
|  | 2 | **HDPE Pipe (PN 16)** |  | 2026-01-07 | 2026-05-12 |  |  |
| CON-LEG101-PR-1640 |  | PO for HDPE Pipe (PN 16) for Ptable Water | 3d | 2026-01-07 | 2026-01-10 | CON-LEG101-SB-1390 | 17d |
| CON-LEG101-PR-1650 |  | Material Fabrication for HDPE Pipe (PN 16) for Ptable Water | 75d | 2026-01-11 | 2026-04-13 | CON-LEG101-PR-1640 | 17d |
| CON-LEG101-PR-1660 |  | Material Delivery for HDPE Pipe (PN 16) for Ptable Water | 15d | 2026-04-14 | 2026-04-30 | CON-LEG101-PR-1650 | 17d |
| CON-LEG101-PR-4010 |  | Staging Time for HDPE Pipe (PN 16) for Ptable Water | 10d | 2026-05-02 | 2026-05-12 | CON-LEG101-PR-1660 | 17d |

| ID | WBS | Task | Duration | Start | Finish | Predecessors | Total float |
| --- | --- | --- | --- | --- | --- | --- | --- |
|  | 1 | **Valves** |  | 2026-01-12 | 2026-08-05 |  |  |
| CON-LEG101-PR-1330 |  | PO for Valves for Ptable Water | 5d | 2026-01-12 | 2026-01-17 | CON-LEG101-SB-2030 | 20d |
| CON-LEG101-PR-1340 |  | Material Fabrication for Valves for Ptable Water | 90d | 2026-01-28 | 2026-05-18 | CON-LEG101-PR-1330, CON-LEG101-PR-1860 SS | 18d |
| CON-LEG101-PR-1350 |  | Material Delivery for Valves for Ptable Water | 15d | 2026-07-08 | 2026-07-25 | CON-LEG101-PR-1970, CON-LEG101-PR-1340 | 0d |
| CON-LEG101-PR-1960 |  | Staging Time for Valves for Ptable Water | 10d | 2026-07-26 | 2026-08-05 | CON-LEG101-PR-1350 | 0d |
|  | 10 | **Fence & Gates** |  | 2026-01-01 | 2026-08-20 |  |  |
|  | 1 | **Metal Fence** |  | 2026-01-01 | 2026-05-09 |  |  |
| CON-LEG101-PR-2000 |  | PO for Metal Fence | 5d | 2026-01-01 | 2026-01-06 | CON-LEG101-SB-2310 | 0d |
| CON-LEG101-PR-2010 |  | Material Fabrication for Metal Fence | 75d | 2026-01-07 | 2026-04-09 | CON-LEG101-PR-2000 | 0d |
| CON-LEG101-PR-2020 |  | Material Delivery for Metal Fence | 15d | 2026-04-11 | 2026-04-27 | CON-LEG101-PR-2010 | 0d |
| CON-LEG101-PR-2080 |  | Staging Time for Metal Fence | 10d | 2026-04-28 | 2026-05-09 | CON-LEG101-PR-2020 | 10d |
|  | 2 | **Gates** |  | 2026-01-05 | 2026-08-20 |  |  |
| CON-LEG101-PR-2030 |  | PO for Gates | 5d | 2026-01-05 | 2026-01-10 | CON-LEG101-SB-2330 | 21d |
| CON-LEG101-PR-2040 |  | Material Fabrication for Gates | 70d | 2026-04-28 | 2026-07-22 | CON-LEG101-PR-2010, CON-LEG101-PR-2030, CON-LEG101-PR-2020 | 13d |
| CON-LEG101-PR-2050 |  | Material Delivery for Gates | 15d | 2026-07-23 | 2026-08-09 | CON-LEG101-PR-2040 | 13d |
| CON-LEG101-PR-2090 |  | Staging Time for Gates | 10d | 2026-08-10 | 2026-08-20 | CON-LEG101-PR-2050, CON-LEG101-PR-1510 | 13d |
|  | 3 | **Paint On Cement Plaster** |  | 2026-01-11 | 2026-06-10 |  |  |
| CON-LEG101-PR-2610 |  | PO for Paint On Cement Plaster | 5d | 2026-01-11 | 2026-01-15 | CON-LEG101-SB-3910, CON-LEG101-PR-2030 | 21d |
| CON-LEG101-PR-2620 |  | Material Fabrication for Paint On Cement Plaster | 30d | 2026-04-11 | 2026-05-14 | CON-LEG101-PR-2020 SS, CON-LEG101-PR-2610 | 0d |
| CON-LEG101-PR-2630 |  | Material Delivery for Paint On Cement Plaster | 10d | 2026-05-16 | 2026-05-26 | CON-LEG101-PR-2620 | 0d |
| CON-LEG101-PR-2940 |  | Staging Time for Paint On Cement Plaster | 9d | 2026-06-01 | 2026-06-10 | CON-LEG101-PR-2630 | 0d |
|  | 7 | **Telecommunications** |  | 2026-01-04 | 2026-12-02 |  |  |
|  | 2 | **Pipe for the Duct** |  | 2026-01-04 | 2026-10-08 |  |  |
| CON-LEG101-PR-3160 |  | PO for Pipe for Duct | 5d | 2026-01-04 | 2026-01-08 | CON-LEG101-SB-3350 | 27d |
| CON-LEG101-PR-3170 |  | Material Fabrication for Pipe for Duct | 55d | 2026-07-01 | 2026-09-02 | CON-LEG101-PR-1100, CON-LEG101-PR-3160 | 9d |
| CON-LEG101-PR-3180 |  | Material Delivery for Pipe for Duct | 15d | 2026-09-03 | 2026-09-20 | CON-LEG101-PR-3170 | 18d |
| CON-LEG101-PR-4020 |  | Staging Time for Pipe for Duct | 15d | 2026-09-21 | 2026-10-08 | CON-LEG101-PR-3180 | 18d |
|  | 1 | **Low Voltage Cables** |  | 2026-01-11 | 2026-11-24 |  |  |
| CON-LEG101-PR-3190 |  | PO for Low Voltage Cables | 5d | 2026-01-11 | 2026-01-15 | CON-LEG101-SB-3390 | 21d |
| CON-LEG101-PR-3210 |  | Material Fabrication for Low Voltage Cables | 55d | 2026-07-01 | 2026-09-02 | CON-LEG101-PR-3170 SS, CON-LEG101-PR-3190 | 9d |
| CON-LEG101-PR-3230 |  | Material Delivery for Low Voltage Cables | 20d | 2026-10-10 | 2026-11-01 | CON-LEG101-PR-3210, CON-LEG101-PR-3180, CON-LEG101-PR-4020 | 18d |
| CON-LEG101-PR-3250 |  | Staging Time for Low Voltage Cables | 20d | 2026-11-02 | 2026-11-24 | CON-LEG101-PR-3230 | 18d |
|  | 4 | **Manhole** |  | 2026-01-13 | 2026-12-02 |  |  |
| CON-LEG101-PR-3200 |  | PO for Manhole | 5d | 2026-01-13 | 2026-01-18 | CON-LEG101-SB-3370 SS | 19d |
| CON-LEG101-PR-3220 |  | Material Fabrication for Manhole | 75d | 2026-07-01 | 2026-09-27 | CON-LEG101-PR-3210 SS, CON-LEG101-PR-3200 | 9d |
| CON-LEG101-PR-3240 |  | Material Delivery for Manhole | 15d | 2026-11-02 | 2026-11-18 | CON-LEG101-PR-3220, CON-LEG101-PR-3230 | 18d |
| CON-LEG101-PR-3260 |  | Staging Time for Manhole | 12d | 2026-11-19 | 2026-12-02 | CON-LEG101-PR-3240 | 18d |
|  | 9 | **Road Works - Civil** |  | 2026-01-12 | 2027-01-04 |  |  |
|  | 10 | **Traffic Signs** |  | 2026-01-12 | 2027-01-04 |  |  |
| CON-LEG101-PR-1610 |  | PO for Traffic Signs | 5d | 2026-01-12 | 2026-01-17 | CON-LEG101-SB-1230 | 20d |
| CON-LEG101-PR-1620 |  | Material Fabrication for Traffic Signs | 90d | 2026-01-28 | 2026-05-18 | CON-LEG101-PR-1610, CON-LEG101-PR-1340 SS | 20d |
| CON-LEG101-PR-1630 |  | Material Delivery for Traffic Signs | 15d | 2026-12-07 | 2026-12-23 | CON-LEG101-PR-1540, CON-LEG101-PR-1620, CON-LEG101-PR-1570 | 16d |
| CON-LEG101-PR-2060 |  | Staging Time for Traffic Signs | 10d | 2026-12-24 | 2027-01-04 | CON-LEG101-PR-1630 | 16d |
|  | 1 | **Electrical Network** |  | 2026-01-04 | 2027-02-02 |  |  |
|  | 11 | **Pipe for the Duct** |  | 2026-01-04 | 2026-06-07 |  |  |
| CON-LEG101-PR-1260 |  | PO for Pipe for Duct | 3d | 2026-01-04 | 2026-01-06 | CON-LEG101-SB-1270 | 8d |
| CON-LEG101-PR-1290 |  | Material Fabrication for Pipe for Duct | 90d | 2026-01-07 | 2026-04-27 | CON-LEG101-PR-1260 | 8d |
| CON-LEG101-PR-1320 |  | Material Delivery for Pipe for Duct | 15d | 2026-05-05 | 2026-05-21 | CON-LEG101-PR-1780, CON-LEG101-PR-2110, CON-LEG101-PR-1290 | 15d |
| CON-LEG101-PR-1400 |  | Staging Time for Valves for Pipe for Duct | 10d | 2026-05-23 | 2026-06-07 | CON-LEG101-PR-1320, CON-LEG101-PR-1340 | 15d |
|  | 12 | **Cable Termination & Joints** |  | 2026-01-11 | 2026-06-24 |  |  |
| CON-LEG101-PR-1240 |  | PO for Cable Termination & Joints | 5d | 2026-01-11 | 2026-01-15 | CON-LEG101-SB-1310 | 21d |
| CON-LEG101-PR-1270 |  | Material Fabrication for Cable Termination & Joints | 90d | 2026-01-28 | 2026-05-18 | CON-LEG101-PR-1240, CON-LEG101-PR-1620 SS | 20d |
| CON-LEG101-PR-1300 |  | Material Delivery for Cable Termination & Joints | 15d | 2026-05-23 | 2026-06-13 | CON-LEG101-PR-1320, CON-LEG101-PR-1270, CON-LEG101-PR-1620 | 17d |
| CON-LEG101-PR-1450 |  | Stagging Time for Cable Termination & Joints | 10d | 2026-06-14 | 2026-06-24 | CON-LEG101-PR-1300, CON-LEG101-PR-1880 | 17d |
|  | 13 | **Earthing System** |  | 2026-01-11 | 2026-08-09 |  |  |
| CON-LEG101-PR-1250 |  | PO for Earthing System | 5d | 2026-01-11 | 2026-01-15 | CON-LEG101-SB-1350 | 21d |
| CON-LEG101-PR-1280 |  | Material Fabrication for Earthing System | 60d | 2026-04-28 | 2026-07-11 | CON-LEG101-PR-1250, CON-LEG101-PR-1290 | 8d |
| CON-LEG101-PR-1310 |  | Material Delivery for Earthing System | 15d | 2026-07-12 | 2026-07-28 | CON-LEG101-PR-1450, CON-LEG101-PR-1280, CON-LEG101-PR-1400 | 8d |
| CON-LEG101-PR-1480 |  | Stagging Time for Earthing System | 10d | 2026-07-29 | 2026-08-09 | CON-LEG101-PR-1310, CON-LEG101-PR-1450, CON-LEG101-PR-1510 | 8d |
|  | 1 | **Medium Voltage Cable** |  | 2026-01-13 | 2026-06-01 |  |  |
| CON-LEG101-PR-1000 |  | PO for Medium Voltage Cable | 5d | 2026-01-13 | 2026-01-18 | CON-LEG101-SB-1670 | 19d |
| CON-LEG101-PR-1080 |  | Material Fabrication for Medium Voltage Cable | 60d | 2026-02-01 | 2026-04-16 | CON-LEG101-LR-15010, CON-LEG101-LR-15030, CON-LEG101-PR-1000 | 9d |
| CON-LEG101-PR-1160 |  | Material Delivery for Medium Voltage Cable | 15d | 2026-04-23 | 2026-05-10 | CON-LEG101-LR-15020, CON-LEG101-PR-1080 | 13d |
| CON-LEG101-PR-1880 |  | Staging Time for Medium Voltage Cable | 15d | 2026-05-11 | 2026-06-01 | CON-LEG101-PR-1160 | 13d |
|  | 4 | **Street Lighting Sub-station** |  | 2026-01-11 | 2026-09-07 |  |  |
| CON-LEG101-PR-1010 |  | PO for Street Lighting Sub-station | 5d | 2026-01-11 | 2026-01-15 | CON-LEG101-SB-1750 | 21d |
| CON-LEG101-PR-1090 |  | Material Fabrication for Street Lighting Sub-station | 60d | 2026-04-18 | 2026-06-30 | CON-LEG101-PR-1080, CON-LEG101-PR-1010 | 12d |
| CON-LEG101-PR-1170 |  | Material Delivery for Street Lighting Sub-station | 15d | 2026-08-10 | 2026-08-26 | CON-LEG101-PR-1480, CON-LEG101-PR-1090 | 8d |
| CON-LEG101-PR-1890 |  | Staging Time for Street Lighting Sub-station | 10d | 2026-08-27 | 2026-09-07 | CON-LEG101-PR-1170, CON-LEG101-PR-1480 | 13d |
|  | 5 | **Low Voltage Cables** |  | 2026-01-07 | 2026-09-26 |  |  |

| ID | WBS | Task | Duration | Start | Finish | Predecessors | Total float |
| --- | --- | --- | --- | --- | --- | --- | --- |
| CON-LEG101-PR-1020 |  | PO for Low Voltage Cables | 5d | 2026-01-07 | 2026-01-12 | CON-LEG101-SB-1790 | 24d |
| CON-LEG101-PR-1100 |  | Material Fabrication for Low Voltage Cables | 60d | 2026-04-18 | 2026-06-30 | CON-LEG101-PR-1080, CON-LEG101-PR-1020 | 9d |
| CON-LEG101-PR-1180 |  | Material Delivery for Low Voltage Cables | 15d | 2026-08-27 | 2026-09-13 | CON-LEG101-PR-1170, CON-LEG101-PR-1100, CON-LEG101-PR-2090 | 8d |
| CON-LEG101-PR-1900 |  | Staging Time for Low Voltage Cables | 10d | 2026-09-14 | 2026-09-26 | CON-LEG101-PR-1180, CON-LEG101-PR-2470, CON-LEG101-PR-2090, CON-LEG101-PR-1890 | 8d |
|  | 2 | **Ring Main Unit** |  | 2026-01-11 | 2026-10-25 |  |  |
| CON-LEG101-PR-2480 |  | PO for Ring Main Unit | 5d | 2026-01-11 | 2026-01-15 | CON-LEG101-SB-1710 | 21d |
| CON-LEG101-PR-2490 |  | Material Fabrication for Ring Main Unit | 70d | 2026-07-01 | 2026-09-20 | CON-LEG101-PR-1090, CON-LEG101-PR-2480 | 12d |
| CON-LEG101-PR-2500 |  | Material Delivery for Ring Main Unit | 15d | 2026-09-27 | 2026-10-13 | CON-LEG101-PR-1900, CON-LEG101-PR-2490, CON-LEG101-PR-1900 FF, CON-LEG101-PR-1910, CON-LEG101-PR-1920 | 8d |
| CON-LEG101-PR-2510 |  | Staging Time for Ring Main Unit | 10d | 2026-10-14 | 2026-10-25 | CON-LEG101-PR-2500 | 8d |
|  | 6 | **Lighting poles** |  | 2026-01-13 | 2026-09-10 |  |  |
| CON-LEG101-PR-1030 |  | PO for Lighting poles | 4d | 2026-01-13 | 2026-01-17 | CON-LEG101-SB-1830 | 20d |
| CON-LEG101-PR-1110 |  | Material Fabrication for Lighting poles | 75d | 2026-05-11 | 2026-08-10 | CON-LEG101-PR-1160, CON-LEG101-PR-1030 | 20d |
| CON-LEG101-PR-1190 |  | Material Delivery for Lighting poles | 15d | 2026-08-11 | 2026-08-27 | CON-LEG101-PR-1110 | 20d |
| CON-LEG101-PR-1910 |  | Staging Time for Lighting poles | 12d | 2026-08-29 | 2026-09-10 | CON-LEG101-PR-1190 | 20d |
|  | 3 | **Lighting panels** |  | 2026-01-11 | 2026-11-05 |  |  |
| CON-LEG101-PR-2520 |  | PO for Lighting panels | 6d | 2026-01-11 | 2026-01-17 | CON-LEG101-SB-2430 | 20d |
| CON-LEG101-PR-2530 |  | Material Fabrication for Lighting panels | 75d | 2026-07-01 | 2026-09-27 | CON-LEG101-PR-2490 SS, CON-LEG101-PR-2520 | 16d |
| CON-LEG101-PR-2540 |  | Material Delivery for Lighting panels | 15d | 2026-09-28 | 2026-10-14 | CON-LEG101-PR-2530 | 17d |
| CON-LEG101-PR-2550 |  | Staging Time for Lighting panels | 10d | 2026-10-26 | 2026-11-05 | CON-LEG101-PR-2510, CON-LEG101-PR-2540 | 8d |
|  | 7 | **Street Lighting Luminaire** |  | 2026-01-13 | 2026-09-10 |  |  |
| CON-LEG101-PR-1040 |  | PO for Street Lighting Luminaire | 4d | 2026-01-13 | 2026-01-17 | CON-LEG101-SB-1870 | 20d |
| CON-LEG101-PR-1120 |  | Material Fabrication for Street Lighting Luminaire | 75d | 2026-05-11 | 2026-08-10 | CON-LEG101-PR-1110 SS, CON-LEG101-PR-1040 | 20d |
| CON-LEG101-PR-1200 |  | Material Delivery for Street Lighting Luminaire | 15d | 2026-08-11 | 2026-08-27 | CON-LEG101-PR-1120 | 20d |
| CON-LEG101-PR-1920 |  | Staging Time for Street Lighting Luminaire | 12d | 2026-08-29 | 2026-09-10 | CON-LEG101-PR-1200 | 20d |
|  | 8 | **System for KWHM** |  | 2026-01-11 | 2027-02-02 |  |  |
| CON-LEG101-PR-1050 |  | PO for System for KWHM | 6d | 2026-01-11 | 2026-01-17 | CON-LEG101-SB-1910 | 20d |
| CON-LEG101-PR-1130 |  | Material Fabrication for System for KWHM | 90d | 2026-09-21 | 2027-01-04 | CON-LEG101-PR-2490, CON-LEG101-PR-1050 | 16d |
| CON-LEG101-PR-1210 |  | Material Delivery for System for KWHM | 15d | 2027-01-05 | 2027-01-21 | CON-LEG101-PR-1130, CON-LEG101-PR-2060 | 16d |
| CON-LEG101-PR-1930 |  | Staging Time for System for KWHM | 10d | 2027-01-23 | 2027-02-02 | CON-LEG101-PR-1210 | 16d |
|  | 9 | **Feeder Piller** |  | 2026-01-11 | 2026-11-01 |  |  |
| CON-LEG101-PR-1060 |  | PO for Feeder Piller | 6d | 2026-01-11 | 2026-01-17 | CON-LEG101-SB-1950 | 20d |
| CON-LEG101-PR-1140 |  | Material Fabrication for Feeder Piller | 75d | 2026-07-01 | 2026-09-27 | CON-LEG101-PR-2530 SS, CON-LEG101-PR-1060 | 16d |
| CON-LEG101-PR-1220 |  | Material Delivery for Feeder Piller | 15d | 2026-09-28 | 2026-10-14 | CON-LEG101-PR-1140 | 20d |
| CON-LEG101-PR-1940 |  | Staging Time for Feeder Piller | 15d | 2026-10-15 | 2026-11-01 | CON-LEG101-PR-1220 | 20d |
|  | 10 | **Street Lighting Panels** |  | 2026-01-11 | 2026-10-26 |  |  |
| CON-LEG101-PR-1070 |  | PO for Street Lighting Panels | 6d | 2026-01-11 | 2026-01-17 | CON-LEG101-SB-1990 | 20d |
| CON-LEG101-PR-1150 |  | Material Fabrication for Street Lighting Panels | 75d | 2026-07-01 | 2026-09-27 | CON-LEG101-PR-1140 SS, CON-LEG101-PR-1070 | 16d |
| CON-LEG101-PR-1230 |  | Material Delivery for Street Lighting Panels | 15d | 2026-09-28 | 2026-10-14 | CON-LEG101-PR-1150 | 16d |
| CON-LEG101-PR-1950 |  | Staging Time for Street Lighting Panels | 10d | 2026-10-15 | 2026-10-26 | CON-LEG101-PR-1230 | 16d |
|  | 8 | **CCTV feeding system and GSM** |  | 2026-01-11 | 2027-03-11 |  |  |
|  | 15 | **LED Screen 43" (24/7 operation) with Ethernet decoders** |  | 2026-01-13 | 2026-12-12 |  |  |
| CON-LEG101-PR-3270 |  | PO for LED Screen 43" (24/7 operation) with Ethernet decoders | 5d | 2026-01-13 | 2026-01-18 | CON-LEG101-SB-3590 SS | 19d |
| CON-LEG101-PR-3280 |  | Material Fabrication for LED Screen 43" (24/7 operation) with Ethernet decoders | 60d | 2026-09-03 | 2026-11-12 | CON-LEG101-PR-3210, CON-LEG101-PR-3270 | 10d |
| CON-LEG101-PR-3290 |  | Material Delivery for LED Screen 43" (24/7 operation) with Ethernet decoders | 15d | 2026-11-14 | 2026-11-30 | CON-LEG101-PR-3280, CON-LEG101-PR-2550, CON-LEG101-PR-1940, CON-LEG101-PR-1950 | 10d |
| CON-LEG101-PR-3950 |  | Staging Time for LED Screen 43" (24/7 operation) with Ethernet decoders | 10d | 2026-12-01 | 2026-12-12 | CON-LEG101-PR-3290 | 10d |
|  | 16 | **Network Video Recorder 4k 64 Channel** |  | 2026-01-17 | 2027-02-25 |  |  |
| CON-LEG101-PR-3740 |  | PO for Network Video Recorder 4k 64 Channel | 2d | 2026-01-17 | 2026-01-18 | CON-LEG101-SB-3610 SS+3d | 19d |
| CON-LEG101-PR-3750 |  | Material Fabrication for Network Video Recorder 4k 64 Channel | 65d | 2026-11-14 | 2027-01-27 | CON-LEG101-PR-3280, CON-LEG101-PR-3740 | 19d |
| CON-LEG101-PR-3760 |  | Material Delivery for Network Video Recorder 4k 64 Channel | 10d | 2027-01-28 | 2027-02-08 | CON-LEG101-PR-3750 | 30d |
| CON-LEG101-PR-3960 |  | Staging Time for Network Video Recorder 4k 64 Channel | 10d | 2027-02-14 | 2027-02-25 | CON-LEG101-PR-3760 | 30d |
|  | 17 | **Keypad** |  | 2026-01-17 | 2027-03-11 |  |  |
| CON-LEG101-PR-3770 |  | PO for Keypad | 2d | 2026-01-17 | 2026-01-18 | CON-LEG101-SB-3650 SS+3d | 19d |
| CON-LEG101-PR-3780 |  | Material Fabrication for Keypad | 75d | 2026-11-14 | 2027-02-08 | CON-LEG101-PR-3750 SS, CON-LEG101-PR-3770 | 19d |
| CON-LEG101-PR-3790 |  | Material Delivery for Keypad | 12d | 2027-02-14 | 2027-02-28 | CON-LEG101-PR-3780 | 19d |
| CON-LEG101-PR-3970 |  | Staging Time for Keypad | 10d | 2027-03-01 | 2027-03-11 | CON-LEG101-PR-3790 | 19d |
|  | 1 | **Fiber Optic Patch Panel 12 port** |  | 2026-01-11 | 2026-11-01 |  |  |
| CON-LEG101-PR-3300 |  | PO for Fiber Optic Patch Panel 12 port | 5d | 2026-01-11 | 2026-01-15 | CON-LEG101-SB-3410 | 21d |
| CON-LEG101-PR-3320 |  | Material Fabrication for Fiber Optic Patch Panel 12 port | 75d | 2026-07-01 | 2026-09-27 | CON-LEG101-PR-3220 SS, CON-LEG101-PR-3300 | 9d |
| CON-LEG101-PR-3340 |  | Material Delivery for Fiber Optic Patch Panel 12 port | 15d | 2026-09-28 | 2026-10-14 | CON-LEG101-PR-3320 | 39d |
| CON-LEG101-PR-3360 |  | Staging Time for Fiber Optic Patch Panel 12 port | 15d | 2026-10-15 | 2026-11-01 | CON-LEG101-PR-3340 | 39d |
|  | 4 | **Modular Industrial Switches for main pole** |  | 2026-01-14 | 2026-12-17 |  |  |
| CON-LEG101-PR-3310 |  | PO for Modular Industrial Switches for main pole | 5d | 2026-01-14 | 2026-01-19 | CON-LEG101-SB-3510 | 18d |
| CON-LEG101-PR-3330 |  | Material Fabrication for Modular Industrial Switches for main pole | 75d | 2026-07-01 | 2026-09-27 | CON-LEG101-PR-3320 SS, CON-LEG101-PR-3310 | 9d |
| CON-LEG101-PR-3350 |  | Material Delivery for Modular Industrial Switches for main pole | 15d | 2026-11-02 | 2026-11-18 | CON-LEG101-PR-3360, CON-LEG101-PR-3330, CON-LEG101-PR-3360 FF | 39d |
| CON-LEG101-PR-3370 |  | Staging Time for Modular Industrial Switches for main pole | 15d | 2026-12-01 | 2026-12-17 | CON-LEG101-PR-3350, CON-LEG101-PR-3870, CON-LEG101-PR-3910 | 29d |
|  | 2 | **8POE ports Industrial Switches for remote poles** |  | 2026-01-13 | 2026-11-07 |  |  |
| CON-LEG101-PR-3380 |  | PO for 8POE ports Industrial Switches for remote poles | 5d | 2026-01-13 | 2026-01-18 | CON-LEG101-SB-3450 SS | 19d |
| CON-LEG101-PR-3390 |  | Material Fabrication for 8POE ports Industrial Switches for remote poles | 70d | 2026-07-01 | 2026-09-20 | CON-LEG101-PR-3330 SS, CON-LEG101-PR-3380 | 9d |
| CON-LEG101-PR-3400 |  | Material Delivery for 8POE ports Industrial Switches for remote poles | 20d | 2026-09-21 | 2026-10-14 | CON-LEG101-PR-3390 | 17d |
| CON-LEG101-PR-3410 |  | Staging Time for 8POE ports Industrial Switches for remote poles | 20d | 2026-10-15 | 2026-11-07 | CON-LEG101-PR-3400 | 17d |

| ID | WBS | Task | Duration | Start | Finish | Predecessors | Total float |
| --- | --- | --- | --- | --- | --- | --- | --- |
|  | 3 | **Core Switch** |  | 2026-01-13 | 2027-01-16 |  |  |
| CON-LEG101-PR-3420 |  | PO for Core Switch | 5d | 2026-01-13 | 2026-01-18 | CON-LEG101-SB-3430 SS | 19d |
| CON-LEG101-PR-3430 |  | Material Fabrication for Core Switch | 75d | 2026-09-21 | 2026-12-17 | CON-LEG101-PR-3390, CON-LEG101-PR-3420 | 29d |
| CON-LEG101-PR-3440 |  | Material Delivery for Core Switch | 15d | 2026-12-19 | 2027-01-04 | CON-LEG101-PR-3430, CON-LEG101-PR-3370, CON-LEG101-PR-3410 | 29d |
| CON-LEG101-PR-3450 |  | Staging Time for Core Switch | 10d | 2027-01-05 | 2027-01-16 | CON-LEG101-PR-3440 | 29d |
|  | 5 | **Access Switch 48 port** |  | 2026-01-13 | 2027-01-20 |  |  |
| CON-LEG101-PR-3460 |  | PO for Access Switch 48 port | 5d | 2026-01-13 | 2026-01-18 | CON-LEG101-SB-3470 SS | 19d |
| CON-LEG101-PR-3470 |  | Material Fabrication for Access Switch 48 port | 75d | 2026-09-30 | 2026-12-26 | CON-LEG101-PR-3430 SS+7d, CON-LEG101-PR-3460 | 33d |
| CON-LEG101-PR-3480 |  | Material Delivery for Access Switch 48 port | 15d | 2026-12-27 | 2027-01-12 | CON-LEG101-PR-3470 | 33d |
| CON-LEG101-PR-3490 |  | Staging Time for Access Switch 48 port | 7d | 2027-01-13 | 2027-01-20 | CON-LEG101-PR-3480, CON-LEG101-PR-3450 SS | 33d |
|  | 6 | **Server** |  | 2026-01-13 | 2026-11-10 |  |  |
| CON-LEG101-PR-3500 |  | PO for Server | 5d | 2026-01-13 | 2026-01-18 | CON-LEG101-SB-3490 SS | 19d |
| CON-LEG101-PR-3510 |  | Material Fabrication for Server | 77d | 2026-07-01 | 2026-09-29 | CON-LEG101-PR-3390 SS, CON-LEG101-PR-3500 | 9d |
| CON-LEG101-PR-3520 |  | Material Delivery for Server | 18d | 2026-09-30 | 2026-10-20 | CON-LEG101-PR-3510 | 21d |
| CON-LEG101-PR-3530 |  | Staging Time for Server | 18d | 2026-10-21 | 2026-11-10 | CON-LEG101-PR-3520 | 21d |
|  | 7 | **Stand rack 42U- 19"** |  | 2026-01-13 | 2027-01-30 |  |  |
| CON-LEG101-PR-3540 |  | PO for Stand rack 42U- 19" | 6d | 2026-01-13 | 2026-01-19 | CON-LEG101-SB-3530 SS | 18d |
| CON-LEG101-PR-3550 |  | Material Fabrication for Stand rack 42U- 19" | 75d | 2026-09-30 | 2026-12-26 | CON-LEG101-PR-3510, CON-LEG101-PR-3540 | 24d |
| CON-LEG101-PR-3560 |  | Material Delivery for Stand rack 42U- 19" | 15d | 2026-12-27 | 2027-01-12 | CON-LEG101-PR-3550 | 29d |
| CON-LEG101-PR-3570 |  | Staging Time for Stand rack 42U- 19" | 15d | 2027-01-13 | 2027-01-30 | CON-LEG101-PR-3560 | 29d |
|  | 8 | **IP Outdoor CCTV POE Camera,5 MP, Metal Housing** |  | 2026-01-13 | 2026-11-01 |  |  |
| CON-LEG101-PR-3580 |  | PO for IP Outdoor CCTV POE Camera,5 MP, Metal Housing | 5d | 2026-01-13 | 2026-01-18 | CON-LEG101-SB-3630 SS | 19d |
| CON-LEG101-PR-3590 |  | Material Fabrication for IP Outdoor CCTV POE Camera,5 MP, Metal Housing | 75d | 2026-07-01 | 2026-09-27 | CON-LEG101-PR-3510 SS, CON-LEG101-PR-3580 | 9d |
| CON-LEG101-PR-3600 |  | Material Delivery for IP Outdoor CCTV POE Camera,5 MP, Metal Housing | 15d | 2026-09-28 | 2026-10-14 | CON-LEG101-PR-3590 | 18d |
| CON-LEG101-PR-3610 |  | Staging Time for IP Outdoor CCTV POE Camera,5 MP, Metal Housing | 15d | 2026-10-15 | 2026-11-01 | CON-LEG101-PR-3600 | 18d |
|  | 9 | **Outdoor PTZ with IR, HDTV 1080 and 31x optical, 12x digital** |  | 2026-01-13 | 2026-11-30 |  |  |
| CON-LEG101-PR-3620 |  | PO for Outdoor PTZ with IR, HDTV 1080 and 31x optical, 12x digital | 5d | 2026-01-13 | 2026-01-18 | CON-LEG101-SB-3550 SS | 19d |
| CON-LEG101-PR-3630 |  | Material Fabrication for Outdoor PTZ with IR, HDTV 1080 and 31x optical, 12x digital | 90d | 2026-07-01 | 2026-10-14 | CON-LEG101-PR-3590 SS, CON-LEG101-PR-3620 | 9d |
| CON-LEG101-PR-3640 |  | Material Delivery for Outdoor PTZ with IR, HDTV 1080 and 31x optical, 12x digital | 15d | 2026-11-02 | 2026-11-18 | CON-LEG101-PR-3630, CON-LEG101-PR-3610 | 18d |
| CON-LEG101-PR-3650 |  | Staging Time for Outdoor PTZ with IR, HDTV 1080 and 31x optical, 12x digital | 10d | 2026-11-19 | 2026-11-30 | CON-LEG101-PR-3640 | 18d |
|  | 10 | **Security workstation with 1 x 19" LED screen** |  | 2026-01-13 | 2027-02-04 |  |  |
| CON-LEG101-PR-3660 |  | PO for Security workstation with 1 x 19" LED screen | 5d | 2026-01-13 | 2026-01-18 | CON-LEG101-SB-3570 SS | 19d |
| CON-LEG101-PR-3670 |  | Material Fabrication for Security workstation with 1 x 19" LED screen | 90d | 2026-09-30 | 2027-01-12 | CON-LEG101-PR-3550 SS, CON-LEG101-PR-3660 | 24d |
| CON-LEG101-PR-3680 |  | Material Delivery for Security workstation with 1 x 19" LED screen | 10d | 2027-01-13 | 2027-01-24 | CON-LEG101-PR-3670 | 24d |
| CON-LEG101-PR-3690 |  | Staging Time for Security workstation with 1 x 19" LED screen | 10d | 2027-01-25 | 2027-02-04 | CON-LEG101-PR-3680 | 24d |
|  | 11 | **Horizontal Power Distribution Unit (min 8 outlets)** |  | 2026-01-13 | 2027-02-28 |  |  |
| CON-LEG101-PR-3700 |  | PO for Horizontal Power Distribution Unit (min 8 outlets) | 5d | 2026-01-13 | 2026-01-18 | CON-LEG101-SB-3670 SS | 19d |
| CON-LEG101-PR-3710 |  | Material Fabrication for Horizontal Power Distribution Unit (min 8 outlets) | 90d | 2026-09-30 | 2027-01-12 | CON-LEG101-PR-3670 SS, CON-LEG101-PR-3700 | 24d |
| CON-LEG101-PR-3720 |  | Material Delivery for Horizontal Power Distribution Unit (min 8 outlets) | 20d | 2027-01-13 | 2027-02-04 | CON-LEG101-PR-3710 | 24d |
| CON-LEG101-PR-3730 |  | Staging Time for Horizontal Power Distribution Unit (min 8 outlets) | 15d | 2027-02-06 | 2027-02-28 | CON-LEG101-PR-3720, CON-LEG101-PR-3490, CON-LEG101-PR-3570, CON-LEG101-PR-3690 | 24d |
|  | 12 | **35 Meters mono pole with Double Platform for Access Points** |  | 2026-01-13 | 2027-03-06 |  |  |
| CON-LEG101-PR-3800 |  | PO for 35 Meters mono pole with Double Platform for Access Points | 5d | 2026-01-13 | 2026-01-18 | CON-LEG101-SB-3690 SS | 19d |
| CON-LEG101-PR-3810 |  | Material Fabrication for 35 Meters mono pole with Double Platform for Access Points | 90d | 2026-09-30 | 2027-01-12 | CON-LEG101-PR-3710 SS, CON-LEG101-PR-3800 | 28d |
| CON-LEG101-PR-3820 |  | Material Delivery for 35 Meters mono pole with Double Platform for Access Points | 20d | 2027-01-13 | 2027-02-04 | CON-LEG101-PR-3810 | 28d |
| CON-LEG101-PR-3830 |  | Staging Time for 35 Meters mono pole with Double Platform for Access Points | 20d | 2027-02-06 | 2027-03-06 | CON-LEG101-PR-3820 | 28d |
|  | 13 | **25 Meters pole for CCTV Cameras** |  | 2026-01-13 | 2026-11-30 |  |  |
| CON-LEG101-PR-3840 |  | PO for 25 Meters pole for CCTV Cameras | 5d | 2026-01-13 | 2026-01-18 | CON-LEG101-SB-3710 SS | 19d |
| CON-LEG101-PR-3850 |  | Material Fabrication for 25 Meters pole for CCTV Cameras | 90d | 2026-07-13 | 2026-10-26 | CON-LEG101-PR-3630 SS+10d, CON-LEG101-PR-3840 | 9d |
| CON-LEG101-PR-3860 |  | Material Delivery for 25 Meters pole for CCTV Cameras | 15d | 2026-10-27 | 2026-11-12 | CON-LEG101-PR-3850 | 27d |
| CON-LEG101-PR-3870 |  | Staging Time for 25 Meters pole for CCTV Cameras | 15d | 2026-11-14 | 2026-11-30 | CON-LEG101-PR-3860 | 27d |
|  | 14 | **Short Range wireless point to point wireless bridge** |  | 2026-01-13 | 2026-11-24 |  |  |
| CON-LEG101-PR-3880 |  | PO for Short Range wireless point to point wireless bridge | 5d | 2026-01-13 | 2026-01-18 | CON-LEG101-SB-3730 SS | 19d |
| CON-LEG101-PR-3890 |  | Material Fabrication for Short Range wireless point to point wireless bridge | 90d | 2026-07-13 | 2026-10-26 | CON-LEG101-PR-3850 SS, CON-LEG101-PR-3880 | 9d |
| CON-LEG101-PR-3900 |  | Material Delivery for Short Range wireless point to point wireless bridge | 15d | 2026-10-27 | 2026-11-12 | CON-LEG101-PR-3890 | 9d |
| CON-LEG101-PR-3910 |  | Staging Time for Short Range wireless point to point wireless bridge | 10d | 2026-11-14 | 2026-11-24 | CON-LEG101-PR-3900 | 9d |
|  | 6 | **Landscape Works** |  | 2026-01-10 | 2027-09-14 |  |  |
|  | 1 | **HDPE Pipes** |  | 2026-01-10 | 2026-12-23 |  |  |
| CON-LEG101-PR-3920 |  | PO for HDPE Pipes | 7d | 2026-01-10 | 2026-01-17 | CON-LEG101-SB-4040 | 20d |
| CON-LEG101-PR-3930 |  | Material Fabrication for HDPE Pipes | 60d | 2026-08-06 | 2026-10-15 | CON-LEG101-PR-1960, CON-LEG101-PR-3920 | 0d |
| CON-LEG101-PR-3940 |  | Material Delivery for HDPE Pipes | 15d | 2026-11-25 | 2026-12-12 | CON-LEG101-PR-3930, CON-LEG101-PR-3900, CON-LEG101-PR-3910 FF, CON-LEG101-PR-3910 | 9d |
| CON-LEG101-PR-3980 |  | Staging Time for HDPE Pipes | 10d | 2026-12-13 | 2026-12-23 | CON-LEG101-PR-3940 | 9d |
|  | 9 | **Curbs and edging** |  | 2026-01-13 | 2027-01-17 |  |  |
| CON-LEG101-PR-2890 |  | PO for Curbs and edging | 5d | 2026-01-13 | 2026-01-18 | CON-LEG101-SB-4190 | 19d |
| CON-LEG101-PR-2950 |  | Material Fabrication for Curbs and edging | 60d | 2026-10-17 | 2026-12-24 | CON-LEG101-PR-3930, CON-LEG101-PR-2890 | 0d |
| CON-LEG101-PR-3010 |  | Material Delivery for Curbs and edging | 10d | 2026-12-26 | 2027-01-05 | CON-LEG101-PR-2950, CON-LEG101-PR-3980 | 8d |
| CON-LEG101-PR-3070 |  | Staging Time for Curbs and edging | 10d | 2027-01-06 | 2027-01-17 | CON-LEG101-PR-3010 | 8d |
|  | 4 | **Electrical Solenoid Valve** |  | 2026-01-13 | 2027-01-28 |  |  |
| CON-LEG101-PR-2840 |  | PO for Electrical Solenoid Valve | 5d | 2026-01-13 | 2026-01-18 | CON-LEG101-SB-4050 | 19d |
| CON-LEG101-PR-2900 |  | Material Fabrication for Electrical Solenoid Valve | 60d | 2026-10-28 | 2027-01-05 | CON-LEG101-PR-2950 SS+10d, CON-LEG101-PR-2840 | 0d |
| CON-LEG101-PR-2960 |  | Material Delivery for Electrical Solenoid Valve | 10d | 2027-01-06 | 2027-01-17 | CON-LEG101-PR-2900 | 8d |

| ID | WBS | Task | Duration | Start | Finish | Predecessors | Total float |
| --- | --- | --- | --- | --- | --- | --- | --- |
| CON-LEG101-PR-3020 |  | Staging Time for Electrical Solenoid Valve | 10d | 2027-01-18 | 2027-01-28 | CON-LEG101-PR-2960, CON-LEG101-PR-3070 | 8d |
|  | 5 | **Quick coupler valve** |  | 2026-01-13 | 2027-02-18 |  |  |
| CON-LEG101-PR-2850 |  | PO for Quick coupler valve | 5d | 2026-01-13 | 2026-01-18 | CON-LEG101-SB-4070 | 19d |
| CON-LEG101-PR-2910 |  | Material Fabrication for Quick coupler valve | 60d | 2026-10-28 | 2027-01-05 | CON-LEG101-PR-2900 SS, CON-LEG101-PR-2850 | 0d |
| CON-LEG101-PR-2970 |  | Material Delivery for Quick coupler valve | 7d | 2027-01-30 | 2027-02-06 | CON-LEG101-PR-2910, CON-LEG101-PR-3020 | 8d |
| CON-LEG101-PR-3030 |  | Staging Time for Quick coupler valve | 7d | 2027-02-07 | 2027-02-18 | CON-LEG101-PR-2970 | 8d |
|  | 2 | **Flush valve** |  | 2026-01-13 | 2027-03-15 |  |  |
| CON-LEG101-PR-3080 |  | PO for Flush valve | 5d | 2026-01-13 | 2026-01-18 | CON-LEG101-SB-4090 | 19d |
| CON-LEG101-PR-3090 |  | Material Fabrication for Flush valve | 60d | 2026-10-28 | 2027-01-05 | CON-LEG101-PR-2910 SS, CON-LEG101-PR-3080 | 0d |
| CON-LEG101-PR-3100 |  | Material Delivery for Flush valve | 10d | 2027-02-20 | 2027-03-03 | CON-LEG101-PR-3090, CON-LEG101-PR-3030 | 8d |
| CON-LEG101-PR-3110 |  | Staging Time for Flush valve | 10d | 2027-03-04 | 2027-03-15 | CON-LEG101-PR-3100 | 8d |
|  | 6 | **Irrigation controller** |  | 2026-01-13 | 2027-04-07 |  |  |
| CON-LEG101-PR-2860 |  | PO for Irrigation controller | 5d | 2026-01-13 | 2026-01-18 | CON-LEG101-SB-4110 | 19d |
| CON-LEG101-PR-2920 |  | Material Fabrication for Irrigation controller | 60d | 2026-10-28 | 2027-01-05 | CON-LEG101-PR-3090 SS, CON-LEG101-PR-2860 | 0d |
| CON-LEG101-PR-2980 |  | Material Delivery for Irrigation controller | 10d | 2027-03-16 | 2027-03-27 | CON-LEG101-PR-2920, CON-LEG101-PR-3110 | 8d |
| CON-LEG101-PR-3040 |  | Staging Time for Irrigation controller | 10d | 2027-03-28 | 2027-04-07 | CON-LEG101-PR-2980 | 8d |
|  | 3 | **Decoder for valve** |  | 2026-01-13 | 2027-05-04 |  |  |
| CON-LEG101-PR-3120 |  | PO for Decoder for valve | 5d | 2026-01-13 | 2026-01-18 | CON-LEG101-SB-4130 | 19d |
| CON-LEG101-PR-3130 |  | Material Fabrication for Decoder for valve | 60d | 2026-10-28 | 2027-01-05 | CON-LEG101-PR-2920 SS, CON-LEG101-PR-3120 | 0d |
| CON-LEG101-PR-3140 |  | Material Delivery for Decoder for valve | 13d | 2027-04-08 | 2027-04-22 | CON-LEG101-PR-3130, CON-LEG101-PR-3040 | 8d |
| CON-LEG101-PR-3150 |  | Staging Time for Decoder for valve | 10d | 2027-04-24 | 2027-05-04 | CON-LEG101-PR-3140 | 8d |
|  | 7 | **Decoder Cables** |  | 2026-01-13 | 2027-05-20 |  |  |
| CON-LEG101-PR-2870 |  | PO for Decoder Cables | 5d | 2026-01-13 | 2026-01-18 | CON-LEG101-SB-4150 | 19d |
| CON-LEG101-PR-2930 |  | Material Fabrication for Decoder Cables | 60d | 2026-10-28 | 2027-01-05 | CON-LEG101-PR-3130 SS, CON-LEG101-PR-2870 | 0d |
| CON-LEG101-PR-2990 |  | Material Delivery for Decoder Cables | 10d | 2027-01-06 | 2027-01-17 | CON-LEG101-PR-2930 | 0d |
| CON-LEG101-PR-3050 |  | Staging Time for Decoder Cables | 10d | 2027-05-05 | 2027-05-20 | CON-LEG101-PR-2990, CON-LEG101-PR-3150 | 8d |
|  | 8 | **Shrubs And Ground Cover** |  | 2026-01-13 | 2027-09-14 |  |  |
| CON-LEG101-PR-2880 |  | PO for agricultural soil | 5d | 2026-01-13 | 2026-01-18 | CON-LEG101-SB-4170 | 19d |
| CON-LEG101-PR-3000 |  | Material Delivery for agricultural soil | 90d | 2027-05-22 | 2027-09-02 | CON-LEG101-PR-2880, CON-LEG101-PR-2980, CON-LEG101-PR-3050 | 8d |
| CON-LEG101-PR-3060 |  | Staging Time for agricultural soil | 10d | 2027-09-04 | 2027-09-14 | CON-LEG101-PR-3000, CON-LEG101-PR-3830 | 8d |
|  | 4 | **Bridge Works** |  | 2026-01-06 | 2027-05-19 |  |  |
|  | 3 | **Prestressing Strands** |  | 2026-01-06 | 2026-06-01 |  |  |
| CON-LEG101-PR-2120 |  | PO for Prestressing Strands | 7d | 2026-01-06 | 2026-01-13 | CON-LEG101-SB-3750 | 22d |
| CON-LEG101-PR-2130 |  | Material for Prestressing Strands | 75d | 2026-01-14 | 2026-04-16 | CON-LEG101-PR-2120 | 22d |
| CON-LEG101-PR-2140 |  | Material Delivery for Prestressing Strands | 15d | 2026-04-18 | 2026-05-04 | CON-LEG101-PR-2130 | 22d |
| CON-LEG101-PR-2400 |  | Staging Time for Prestressing Strands | 20d | 2026-05-05 | 2026-06-01 | CON-LEG101-PR-2140 | 22d |
|  | 6 | **Bridge Bearings** |  | 2026-01-12 | 2026-07-12 |  |  |
| CON-LEG101-PR-2180 |  | PO for Bridge Bearings | 5d | 2026-01-12 | 2026-01-17 | CON-LEG101-SB-3790 | 9d |
| CON-LEG101-PR-2190 |  | Material Fabrication for Bridge Bearings | 75d | 2026-01-18 | 2026-04-20 | CON-LEG101-PR-2180 | 9d |
| CON-LEG101-PR-2200 |  | Material Delivery for Bridge Bearings | 15d | 2026-06-02 | 2026-06-18 | CON-LEG101-PR-2190, CON-LEG101-PR-2400 | 22d |
| CON-LEG101-PR-2240 |  | Staging Time for Bridge Bearings | 20d | 2026-06-20 | 2026-07-12 | CON-LEG101-PR-2200 | 22d |
|  | 8 | **Bridge Gully (Scupper) drainage** |  | 2026-01-12 | 2026-08-27 |  |  |
| CON-LEG101-PR-2370 |  | PO for Bridge Gully (Scupper) drainage | 5d | 2026-01-12 | 2026-01-17 | CON-LEG101-SB-3890 | 20d |
| CON-LEG101-PR-2380 |  | Material Fabrication for Bridge Gully (Scupper) drainage | 60d | 2026-04-21 | 2026-07-04 | CON-LEG101-PR-2190, CON-LEG101-PR-2370 | 9d |
| CON-LEG101-PR-2390 |  | Material Delivery for Bridge Gully (Scupper) drainage | 20d | 2026-07-13 | 2026-08-04 | CON-LEG101-PR-2380, CON-LEG101-PR-2240 | 22d |
| CON-LEG101-PR-2410 |  | Staging Time for Bridge Gully (Scupper) drainage | 20d | 2026-08-05 | 2026-08-27 | CON-LEG101-PR-2390 | 22d |
|  | 4 | **New Jersey** |  | 2026-01-12 | 2026-10-06 |  |  |
| CON-LEG101-PR-2150 |  | PO for New Jersey | 5d | 2026-01-12 | 2026-01-17 | CON-LEG101-SB-3770 | 20d |
| CON-LEG101-PR-2160 |  | Material Fabrication for New Jersey | 60d | 2026-07-05 | 2026-09-12 | CON-LEG101-PR-2380, CON-LEG101-PR-2150 | 9d |
| CON-LEG101-PR-2170 |  | Material Delivery for New Jersey | 10d | 2026-09-13 | 2026-09-24 | CON-LEG101-PR-2160, CON-LEG101-PR-2390 FF, CON-LEG101-PR-2410 | 9d |
| CON-LEG101-PR-2420 |  | Staging Time for New Jersey | 10d | 2026-09-26 | 2026-10-06 | CON-LEG101-PR-2170 | 9d |
|  | 7 | **Expansion Joints** |  | 2026-01-12 | 2027-01-07 |  |  |
| CON-LEG101-PR-2210 |  | PO for Expansion Joints | 5d | 2026-01-12 | 2026-01-17 | CON-LEG101-SB-3810 | 20d |
| CON-LEG101-PR-2220 |  | Material Fabrication for Expansion Joints | 60d | 2026-10-07 | 2026-12-15 | CON-LEG101-PR-2420, CON-LEG101-PR-2210 | 9d |
| CON-LEG101-PR-2230 |  | Material Delivery for Expansion Joints | 10d | 2026-12-16 | 2026-12-27 | CON-LEG101-PR-2220, CON-LEG101-PR-2420 | 9d |
| CON-LEG101-PR-2250 |  | Staging Time for Expansion Joints | 10d | 2026-12-28 | 2027-01-07 | CON-LEG101-PR-2230 | 9d |
|  | 1 | **Guard Rail** |  | 2026-01-12 | 2027-03-27 |  |  |
| CON-LEG101-PR-2260 |  | PO for Guard Rail | 5d | 2026-01-12 | 2026-01-17 | CON-LEG101-SB-3830 | 20d |
| CON-LEG101-PR-2270 |  | Material Fabrication for Guard Rail | 75d | 2026-10-07 | 2027-01-02 | CON-LEG101-PR-2220 SS, CON-LEG101-PR-2260 | 14d |
| CON-LEG101-PR-2280 |  | Material Delivery for Guard Rail | 15d | 2027-01-09 | 2027-01-25 | CON-LEG101-PR-2270, CON-LEG101-PR-2250 | 9d |
| CON-LEG101-PR-2290 |  | Staging Time for Guard Rail | 20d | 2027-03-04 | 2027-03-27 | CON-LEG101-PR-2280, CON-LEG101-PR-3100 | 16d |
|  | 5 | **Logo MODON** |  | 2026-01-12 | 2027-05-19 |  |  |
| CON-LEG101-PR-2340 |  | PO for Logo MODON | 5d | 2026-01-12 | 2026-01-17 | CON-LEG101-SB-3870 | 20d |
| CON-LEG101-PR-2350 |  | Material Fabrication for Logo MODON | 75d | 2027-01-09 | 2027-04-11 | CON-LEG101-PR-2280 SS, CON-LEG101-PR-2340 | 9d |
| CON-LEG101-PR-2360 |  | Material Delivery for Logo MODON | 19d | 2027-04-12 | 2027-05-03 | CON-LEG101-PR-2350, CON-LEG101-PR-2290 | 9d |
| CON-LEG101-PR-2430 |  | Staging Time for Logo MODON | 10d | 2027-05-04 | 2027-05-19 | CON-LEG101-PR-2360 | 9d |
|  | 2 | **GRP Panel** |  | 2026-01-12 | 2027-04-25 |  |  |
| CON-LEG101-PR-2300 |  | PO for GRP Panel | 5d | 2026-01-12 | 2026-01-17 | CON-LEG101-SB-3850 | 20d |
| CON-LEG101-PR-2310 |  | Material Fabrication for GRP Panel | 60d | 2027-01-09 | 2027-03-24 | CON-LEG101-PR-2350 SS, CON-LEG101-PR-2300 | 18d |
| CON-LEG101-PR-2320 |  | Material Delivery for GRP Panel | 15d | 2027-03-28 | 2027-04-13 | CON-LEG101-PR-2310, CON-LEG101-PR-2290 | 16d |

| ID | WBS | Task | Duration | Start | Finish | Predecessors | Total float |
| --- | --- | --- | --- | --- | --- | --- | --- |
| CON-LEG101-PR-2330 |  | Staging Time for GRP Panel | 10d | 2027-04-14 | 2027-04-25 | CON-LEG101-PR-2320 | 16d |
|  | 11 | **Irrigation Works** |  | 2026-01-12 | 2027-06-28 |  |  |
|  | 1 | **Flush valve** |  | 2026-01-17 | 2027-05-08 |  |  |
| CON-LEG101-PR-2640 |  | PO for Flush valve | 3d | 2026-01-17 | 2026-01-19 | CON-LEG101-SB-3940 | 18d |
| CON-LEG101-PR-2680 |  | Material Fabrication for Flush valve | 60d | 2027-01-18 | 2027-04-03 | CON-LEG101-PR-2990, CON-LEG101-PR-2640 | 0d |
| CON-LEG101-PR-2720 |  | Material Delivery for Flush valve | 20d | 2027-04-04 | 2027-04-26 | CON-LEG101-PR-2990, CON-LEG101-PR-2680 | 16d |
| CON-LEG101-PR-2760 |  | Staging Time for Flush valve | 10d | 2027-04-27 | 2027-05-08 | CON-LEG101-PR-2930, CON-LEG101-PR-2720, CON-LEG101-PR-2070 | 16d |
|  | 4 | **16 mm dia (O.D.) linear low density polyethylene tubing** |  | 2026-01-12 | 2027-05-11 |  |  |
| CON-LEG101-PR-2650 |  | PO for 16 mm dia (O.D.) linear low density polyethylene tubing | 7d | 2026-01-12 | 2026-01-19 | CON-LEG101-SB-3950 | 18d |
| CON-LEG101-PR-2690 |  | Material Fabrication for 16 mm dia (O.D.) linear low density polyethylene tubing | 70d | 2027-01-18 | 2027-04-14 | CON-LEG101-PR-2680 SS, CON-LEG101-PR-2650 | 0d |
| CON-LEG101-PR-2730 |  | Material Delivery for 16 mm dia (O.D.) linear low density polyethylene tubing | 13d | 2027-04-15 | 2027-04-29 | CON-LEG101-PR-2690 | 0d |
| CON-LEG101-PR-2770 |  | Staging Time for 16 mm dia (O.D.) linear low density polyethylene tubing | 10d | 2027-05-01 | 2027-05-11 | CON-LEG101-PR-2680 SS, CON-LEG101-PR-2730 | 0d |
|  | 5 | **Irrigation Controller** |  | 2026-01-14 | 2027-06-20 |  |  |
| CON-LEG101-PR-2660 |  | PO for Irrigation Controller | 5d | 2026-01-14 | 2026-01-19 | CON-LEG101-SB-3970 | 18d |
| CON-LEG101-PR-2700 |  | Material Fabrication for Irrigation Controller | 75d | 2027-01-26 | 2027-04-28 | CON-LEG101-PR-2690 SS+7d, CON-LEG101-PR-2660 | 10d |
| CON-LEG101-PR-2740 |  | Material Delivery for Irrigation Controller | 20d | 2027-05-12 | 2027-06-08 | CON-LEG101-PR-2700, CON-LEG101-PR-2770 | 10d |
| CON-LEG101-PR-2780 |  | Staging Time for Irrigation Controller | 10d | 2027-06-09 | 2027-06-20 | CON-LEG101-PR-2740, CON-LEG101-PR-1530 | 10d |
|  | 2 | **Single station decoder** |  | 2026-01-15 | 2027-06-14 |  |  |
| CON-LEG101-PR-2800 |  | PO for Single station decoder | 4d | 2026-01-15 | 2026-01-19 | CON-LEG101-SB-3990 | 18d |
| CON-LEG101-PR-2810 |  | Material Fabrication for Single station decoder | 75d | 2027-02-02 | 2027-05-05 | CON-LEG101-PR-2700 SS+6d, CON-LEG101-PR-2800 | 10d |
| CON-LEG101-PR-2820 |  | Material Delivery for Single station decoder | 20d | 2027-05-06 | 2027-06-02 | CON-LEG101-PR-2810 | 10d |
| CON-LEG101-PR-2830 |  | Staging Time for Single station decoder | 10d | 2027-06-03 | 2027-06-14 | CON-LEG101-PR-2820 | 10d |
|  | 6 | **Decoder cables 12 AWG** |  | 2026-01-17 | 2027-06-28 |  |  |
| CON-LEG101-PR-2670 |  | PO for Decoder cables 12 AWG | 3d | 2026-01-17 | 2026-01-19 | CON-LEG101-SB-4010 | 18d |
| CON-LEG101-PR-2710 |  | Material Fabrication for Decoder cables 12 AWG | 75d | 2027-02-15 | 2027-05-13 | CON-LEG101-PR-2810 SS+7d, CON-LEG101-PR-2670 | 12d |
| CON-LEG101-PR-2750 |  | Material Delivery for Decoder cables 12 AWG | 20d | 2027-05-19 | 2027-06-10 | CON-LEG101-PR-2710 | 12d |
| CON-LEG101-PR-2790 |  | Staging Time for Decoder cables 12 AWG | 15d | 2027-06-12 | 2027-06-28 | CON-LEG101-PR-2750 | 12d |
|  | 1 | **Construction** |  | 2025-12-20 | 2027-10-18 |  |  |
|  | 9 | **Site Demolition** |  | 2025-12-20 | 2026-03-03 |  |  |
| CON-LEG101-SD-1000 |  | Removal of chain link fence [Demolition Works ] | 21d | 2025-12-20 | 2026-01-12 | CON-LEG101-MS-1070, CON-LEG101-MB-1340, CON-LEG101-MB-1270, CON-LEG101-MB-1260, CON-LEG101-MB-1250, CON-LEG101-MB-1160, CON-LEG101-MB-1150, CON-LEG101-MB-1130, CON-LEG101-MB-1120, CON-LEG101-MB-1110, CON-LEG101-MB-1020, CON-LEG101-MB-1000, CON-LEG101-TP-1330, CON-LEG101-PA-1000, CON-LEG101-PA-1010, CON-LEG101-PA-1020, CON-LEG101-PA-1030, CON-LEG101-PA-1040, CON-LEG101-PS-1100, CON-LEG101-PS-1110, CON-LEG101-PS-1120, CON-LEG101-PS-1130, CON-LEG101-PS-1140, CON-LEG101-PS-1150, CON-LEG101-PS-1160, CON-LEG101-PS-1170, CON-LEG101-PS-1090 | 0d |
| CON-LEG101-SD-1010 |  | Removal of concrete fence [Demolition Works ] | 21d | 2026-01-13 | 2026-02-05 | CON-LEG101-SD-1000, CON-LEG101-MS-1070, CON-LEG101-MB-1340, CON-LEG101-MB-1270, CON-LEG101-MB-1260, CON-LEG101-MB-1250, CON-LEG101-MB-1160, CON-LEG101-MB-1150, CON-LEG101-MB-1130, CON-LEG101-MB-1120, CON-LEG101-MB-1110, CON-LEG101-MB-1020, CON-LEG101-MB-1000, CON-LEG101-TP-1330, CON-LEG101-PA-1000, CON-LEG101-PA-1010, CON-LEG101-PA-1020, CON-LEG101-PA-1030, CON-LEG101-PA-1040, CON-LEG101-PS-1100, CON-LEG101-PS-1110, CON-LEG101-PS-1120, CON-LEG101-PS-1130, CON-LEG101-PS-1140, CON-LEG101-PS-1150, CON-LEG101-PS-1160, CON-LEG101-PS-1170, CON-LEG101-PS-1090 | 0d |
| CON-LEG101-SD-1030 |  | Demolition of existing structures [Demolition Works ] | 21d | 2026-01-13 | 2026-02-05 | CON-LEG101-SD-1000, CON-LEG101-MS-1070, CON-LEG101-MB-1340, CON-LEG101-MB-1270, CON-LEG101-MB-1260, CON-LEG101-MB-1250, CON-LEG101-MB-1160, CON-LEG101-MB-1150, CON-LEG101-MB-1130, CON-LEG101-MB-1120, CON-LEG101-MB-1110, CON-LEG101-MB-1020, CON-LEG101-MB-1000, CON-LEG101-TP-1330, CON-LEG101-PA-1000, CON-LEG101-PA-1010, CON-LEG101-PA-1020, CON-LEG101-PA-1030, CON-LEG101-PA-1040, CON-LEG101-PS-1100, CON-LEG101-PS-1110, CON-LEG101-PS-1120, CON-LEG101-PS-1130, CON-LEG101-PS-1140, CON-LEG101-PS-1150, CON-LEG101-PS-1160, CON-LEG101-PS-1170, CON-LEG101-PS-1090 | 0d |
| CON-LEG101-SD-1020 |  | Removal of Electricity distribution panel [Demolition Works ] | 21d | 2026-02-07 | 2026-03-03 | CON-LEG101-SD-1010, CON-LEG101-MS-1070, CON-LEG101-MB-1340, CON-LEG101-MB-1270, CON-LEG101-MB-1260, CON-LEG101-MB-1250, CON-LEG101-MB-1160, CON-LEG101-MB-1150, CON-LEG101-MB-1130, CON-LEG101-MB-1120, CON-LEG101-MB-1110, CON-LEG101-MB-1020, CON-LEG101-MB-1000, CON-LEG101-TP-1330, CON-LEG101-PA-1000, CON-LEG101-PA-1010, CON-LEG101-PA-1020, CON-LEG101-PA-1030, CON-LEG101-PA-1040, CON-LEG101-PS-1100, CON-LEG101-PS-1110, CON-LEG101-PS-1120, CON-LEG101-PS-1130, CON-LEG101-PS-1140, CON-LEG101-PS-1150, CON-LEG101-PS-1160, CON-LEG101-PS-1170, CON-LEG101-PS-1090 | 8d |
|  | 1 | **Roads & Meduim Voltage** |  | 2026-01-06 | 2026-09-17 |  |  |
|  | 1 | **Local – 01** |  | 2026-01-06 | 2026-09-17 |  |  |
|  | 1 | **LOCAL - 01 Segment-01 (From 0+000 to 1+066)** |  | 2026-01-06 | 2026-08-17 |  |  |
|  | 7 | **Road Works** |  | 2026-01-20 | 2026-08-17 |  |  |
|  | 1 | **Earthworks and Site Grading** |  | 2026-01-20 | 2026-05-11 |  |  |
| CON-LEG101-LR-1360 |  | Excavation for Roadway [Local – 01 Segment-01] | 21d | 2026-01-20 | 2026-02-12 | CON-LEG101-SD-1000, CON-LEG101-EN-1570, CON-LEG101-EN-1580, CON-LEG101-EN-1590, CON-LEG101-EN-1600, CON-LEG101-EN-1610, CON-LEG101-EN-3440, CON-LEG101-MS-1060 | 0d |
| CON-LEG101-LR-2760 |  | Parcrels Excavation for Roadway [Local – 01 Segment-01] | 20d | 2026-02-14 | 2026-03-09 | CON-LEG101-LR-1360, CON-LEG101-EN-1570, CON-LEG101-EN-1580, CON-LEG101-EN-1590, CON-LEG101-EN-1600, CON-LEG101-EN-1610, CON-LEG101-EN-3440 | 6d |
| CON-LEG101-LR-4070 |  | Embankments to the roads [Local – 01 Segment-01] | 15d | 2026-03-10 | 2026-03-31 | CON-LEG101-PR-4000, CON-LEG101-LR-2760, CON-LEG101-EN-1570, CON-LEG101-EN-1580, CON-LEG101-EN-1590, CON-LEG101-EN-1600, CON-LEG101-EN-1610, CON-LEG101-EN-3440, CON-LEG101-SD-1020 | 7d |
| CON-LEG101-LR-4570 |  | Embankments to the parcels for roads [Local – 01 Segment-01] | 21d | 2026-04-18 | 2026-05-11 | CON-LEG101-PR-4000, CON-LEG101-LR-4070, CON-LEG101-EN-1570, CON-LEG101-EN-1580, CON-LEG101-EN-1590, CON-LEG101-EN-1600, CON-LEG101-EN-1610, CON-LEG101-EN-3440, CON-LEG101-PR-1080 | 22d |
|  | 2 | **Asphalt Work** |  | 2026-06-16 | 2026-08-17 |  |  |
| CON-LEG101-LR-5580 |  | Subgrade [Local – 01 Segment-01] | 14d | 2026-06-16 | 2026-07-01 | CON-LEG101-LR-3500, CON-LEG101-LR-10910, CON-LEG101-PR-4000, CON-LEG101-LR-4570, CON-LEG101-LR-4200, CON-LEG101-LR-3410, CON-LEG101-EN-3440 | 13d |
| CON-LEG101-LR-5680 |  | Aggregate base course [Local – 01 Segment-01] | 10d | 2026-07-23 | 2026-08-03 | CON-LEG101-LR-10860, CON-LEG101-LR-5580, CON-LEG101-PR-1490, CON-LEG101-EN-3470 | 12d |
| CON-LEG101-LR-5780 |  | Prime Coat (MC1) [Local – 01 Segment-01] | 6d | 2026-08-04 | 2026-08-10 | CON-LEG101-LR-5680 | 12d |
| CON-LEG101-LR-5880 |  | Bituminous Base Course [Local – 01 Segment-01] | 6d | 2026-08-11 | 2026-08-17 | CON-LEG101-LR-5780, CON-LEG101-PR-1510 | 12d |
|  | 8 | **Electrical Works** |  | 2026-01-06 | 2026-07-16 |  |  |
| CON-LEG101-LR-15000 |  | Approval of Subcontractor / Supplier / Consultant for Medium Voltage from SEC | 10d | 2026-01-06 | 2026-01-17 | CON-LEG101-SB-1670 SS | 9d |
| CON-LEG101-LR-15010 |  | Approval Materials of Medium Voltage from SEC | 10d | 2026-01-18 | 2026-01-28 | CON-LEG101-LR-15000 | 9d |
| CON-LEG101-LR-15030 |  | PO for Medium Voltage | 2d | 2026-01-29 | 2026-01-31 | CON-LEG101-LR-15010 | 9d |
| CON-LEG101-LR-15020 |  | Testing Materials of Medium Voltage from SEC | 5d | 2026-04-18 | 2026-04-22 | CON-LEG101-LR-15010, CON-LEG101-PR-1080 | 13d |
|  | 2 | **Medium Voltage** |  | 2026-06-02 | 2026-07-16 |  |  |
| CON-LEG101-LR-6880 |  | Excavation for Medium Voltage trench [Local – 01 Segment-01] | 7d | 2026-06-02 | 2026-06-09 | CON-LEG101-PR-1880, CON-LEG101-EN-1660, CON-LEG101-EN-3440, CON-LEG101-LR-4570 | 13d |
| CON-LEG101-LR-6970 |  | Installation of Medium Voltage Cables Duct Banks [Local – 01 Segment-01] | 10d | 2026-06-10 | 2026-06-21 | CON-LEG101-PR-1400, CON-LEG101-LR-6880, CON-LEG101-PR-1320 | 13d |
| CON-LEG101-LR-7060 |  | Installation of Medium Voltage Cables [Local – 01 Segment-01] | 7d | 2026-06-22 | 2026-06-29 | CON-LEG101-LR-6970 | 13d |
| CON-LEG101-LR-7150 |  | Installation of Straight joints cables [Local – 01 Segment-01] | 2d | 2026-06-30 | 2026-07-01 | CON-LEG101-PR-1450, CON-LEG101-LR-7060, CON-LEG101-PR-1300 | 13d |
| CON-LEG101-LR-7240 |  | Installation of Cable Termination for 13.8 kv 3Cx 500 mm², Al /XLPE/LLDPE [Local – 01 Segment-01] | 3d | 2026-07-02 | 2026-07-05 | CON-LEG101-PR-1450, CON-LEG101-LR-7150, CON-LEG101-PR-1300, CON-LEG101-LR-5580 | 13d |
| CON-LEG101-LR-7330 |  | Installation of Medium Voltage Switchgears [Local – 01 Segment-01] | 7d | 2026-07-06 | 2026-07-13 | CON-LEG101-PR-1450, CON-LEG101-LR-7240, CON-LEG101-PR-1300 | 13d |
| CON-LEG101-LR-7680 |  | Installation of Cable Termination [Local – 01 Segment-01] | 3d | 2026-07-14 | 2026-07-16 | CON-LEG101-LR-7330, CON-LEG101-PR-1450, CON-LEG101-PR-1300 | 13d |
|  | 2 | **LOCAL - 01 Segment-02 (From 1+066 to 2+133)** |  | 2026-01-20 | 2026-08-31 |  |  |
|  | 7 | **Road Works** |  | 2026-01-20 | 2026-08-31 |  |  |
|  | 1 | **Earthworks and Site Grading** |  | 2026-01-20 | 2026-04-26 |  |  |
| CON-LEG101-LR-1450 |  | Excavation for Roadway [Local – 01 Segment-02] | 21d | 2026-01-20 | 2026-02-12 | CON-LEG101-SD-1000, CON-LEG101-LR-1360 SS, CON-LEG101-EN-1570, CON-LEG101-EN-1580, CON-LEG101-EN-1590, CON-LEG101-EN-1600, CON-LEG101-EN-1610, CON-LEG101-EN-3440 | 0d |
| CON-LEG101-LR-2770 |  | Parcrels Excavation for Roadway [Local – 01 Segment-02] | 18d | 2026-02-14 | 2026-03-07 | CON-LEG101-LR-1450, CON-LEG101-EN-1570, CON-LEG101-EN-1580, CON-LEG101-EN-1590, CON-LEG101-EN-1600, CON-LEG101-EN-1610, CON-LEG101-EN-3440 | 0d |
| CON-LEG101-LR-4170 |  | Embankments to the roads [Local – 01 Segment-02] | 19d | 2026-03-08 | 2026-04-02 | CON-LEG101-PR-4000, CON-LEG101-LR-2770, CON-LEG101-EN-1570, CON-LEG101-EN-1580, CON-LEG101-EN-1590, CON-LEG101-EN-1600, CON-LEG101-EN-1610, CON-LEG101-EN-3440 | 0d |
| CON-LEG101-LR-4640 |  | Embankments to the parcels for roads [Local – 01 Segment-02] | 20d | 2026-04-04 | 2026-04-26 | CON-LEG101-PR-4000, CON-LEG101-LR-4170, CON-LEG101-EN-1570, CON-LEG101-EN-1580, CON-LEG101-EN-1590, CON-LEG101-EN-1600, CON-LEG101-EN-1610, CON-LEG101-EN-3440 | 0d |
|  | 2 | **Asphalt Work** |  | 2026-06-17 | 2026-08-31 |  |  |
| CON-LEG101-LR-5590 |  | Subgrade [Local – 01 Segment-02] | 14d | 2026-06-17 | 2026-07-02 | CON-LEG101-LR-3510, CON-LEG101-LR-10960, CON-LEG101-PR-4000, CON-LEG101-LR-1450, CON-LEG101-LR-2770, CON-LEG101-LR-4170, CON-LEG101-LR-4640, CON-LEG101-LR-4210, CON-LEG101-LR-3420, CON-LEG101-EN-3440 | 13d |
| CON-LEG101-LR-5690 |  | Aggregate base course [Local – 01 Segment-02] | 14d | 2026-08-02 | 2026-08-17 | CON-LEG101-LR-11020, CON-LEG101-LR-5590, CON-LEG101-PR-1490, CON-LEG101-EN-3470 | 12d |

| ID | WBS | Task | Duration | Start | Finish | Predecessors | Total float |
| --- | --- | --- | --- | --- | --- | --- | --- |
| CON-LEG101-LR-5790 |  | Prime Coat (MC1) [Local – 01 Segment-02] | 6d | 2026-08-18 | 2026-08-24 | CON-LEG101-LR-5690, CON-LEG101-LR-7680, CON-LEG101-LR-5880 | 12d |
| CON-LEG101-LR-5890 |  | Bituminous Base Course [Local – 01 Segment-02] | 6d | 2026-08-25 | 2026-08-31 | CON-LEG101-LR-5790, CON-LEG101-PR-1510 | 12d |
|  | 8 | **Electrical Works** |  | 2026-06-15 | 2026-08-04 |  |  |
|  | 2 | **Medium Voltage** |  | 2026-06-15 | 2026-08-04 |  |  |
| CON-LEG101-LR-6890 |  | Excavation for Medium Voltage trench [Local – 01 Segment-02] | 7d | 2026-06-15 | 2026-06-22 | CON-LEG101-LR-3420, CON-LEG101-LR-4210, CON-LEG101-PR-1880, CON-LEG101-LR-6880, CON-LEG101-EN-1660, CON-LEG101-EN-3440 | 12d |
| CON-LEG101-LR-6980 |  | Installation of Medium Voltage Cables Duct Banks [Local – 01 Segment-02] | 10d | 2026-06-23 | 2026-07-04 | CON-LEG101-PR-1400, CON-LEG101-LR-6890, CON-LEG101-PR-1320 | 12d |
| CON-LEG101-LR-7070 |  | Installation of Medium Voltage Cables [Local – 01 Segment-02] | 7d | 2026-07-05 | 2026-07-12 | CON-LEG101-LR-6980, CON-LEG101-LR-5590 | 12d |
| CON-LEG101-LR-7160 |  | Installation of Straight joints cables [Local – 01 Segment-02] | 5d | 2026-07-13 | 2026-07-18 | CON-LEG101-PR-1450, CON-LEG101-LR-7070, CON-LEG101-PR-1300 | 12d |
| CON-LEG101-LR-7250 |  | Installation of Cable Termination for 13.8 kv 3Cx 500 mm², Al /XLPE/LLDPE [Local – 01 Segment-02] | 3d | 2026-07-19 | 2026-07-21 | CON-LEG101-PR-1450, CON-LEG101-LR-7160, CON-LEG101-PR-1300, CON-LEG101-LR-7680 | 12d |
| CON-LEG101-LR-7340 |  | Installation of Medium Voltage Switchgears [Local – 01 Segment-02] | 7d | 2026-07-22 | 2026-07-29 | CON-LEG101-PR-1450, CON-LEG101-LR-7250, CON-LEG101-PR-1300 | 12d |
| CON-LEG101-LR-7690 |  | Installation of Cable Termination [Local – 01 Segment-02] | 5d | 2026-07-30 | 2026-08-04 | CON-LEG101-LR-7340, CON-LEG101-PR-1450, CON-LEG101-PR-1300 | 12d |
|  | 3 | **LOCAL - 01 Segment-03 (From 2+133 to 3+200)** |  | 2026-03-10 | 2026-09-17 |  |  |
|  | 7 | **Road Works** |  | 2026-03-10 | 2026-09-09 |  |  |
|  | 1 | **Earthworks and Site Grading** |  | 2026-03-10 | 2026-06-21 |  |  |
| CON-LEG101-LR-1540 |  | Excavation for Roadway [Local – 01 Segment-03] | 21d | 2026-03-10 | 2026-04-07 | CON-LEG101-SD-1000, CON-LEG101-LR-1450, CON-LEG101-EN-1570, CON-LEG101-EN-1580, CON-LEG101-EN-1590, CON-LEG101-EN-1600, CON-LEG101-EN-1610, CON-LEG101-EN-3440, CON-LEG101-LR-2760 | 6d |
| CON-LEG101-LR-2860 |  | Parcrels Excavation for Roadway [Local – 01 Segment-03] | 18d | 2026-04-08 | 2026-04-28 | CON-LEG101-LR-1540, CON-LEG101-EN-1570, CON-LEG101-EN-1580, CON-LEG101-EN-1590, CON-LEG101-EN-1600, CON-LEG101-EN-1610, CON-LEG101-EN-3440 | 12d |
| CON-LEG101-LR-4270 |  | Embankments to the roads [Local – 01 Segment-03] | 21d | 2026-04-29 | 2026-05-23 | CON-LEG101-LR-2860, CON-LEG101-EN-1570, CON-LEG101-EN-1580, CON-LEG101-EN-1590, CON-LEG101-EN-1600, CON-LEG101-EN-1610, CON-LEG101-EN-3440 | 12d |
| CON-LEG101-LR-4710 |  | Embankments to the parcels for roads [Local – 01 Segment-03] | 21d | 2026-05-24 | 2026-06-21 | CON-LEG101-LR-4270, CON-LEG101-EN-1570, CON-LEG101-EN-1580, CON-LEG101-EN-1590, CON-LEG101-EN-1600, CON-LEG101-EN-1610, CON-LEG101-EN-3440, CON-LEG101-LR-4570 | 12d |
|  | 2 | **Asphalt Work** |  | 2026-07-15 | 2026-09-09 |  |  |
| CON-LEG101-LR-5600 |  | Subgrade [Local – 01 Segment-03] | 14d | 2026-07-15 | 2026-07-30 | CON-LEG101-LR-3520, CON-LEG101-LR-11060, CON-LEG101-LR-4710, CON-LEG101-LR-2860, CON-LEG101-LR-4270, CON-LEG101-LR-4710 FF, CON-LEG101-LR-4220, CON-LEG101-LR-3430, CON-LEG101-EN-3440 | 16d |
| CON-LEG101-LR-5700 |  | Aggregate base course [Local – 01 Segment-03] | 10d | 2026-08-05 | 2026-08-16 | CON-LEG101-LR-11120, CON-LEG101-LR-5600, CON-LEG101-PR-1490, CON-LEG101-EN-3470, CON-LEG101-LR-7690 | 12d |
| CON-LEG101-LR-5800 |  | Prime Coat (MC1) [Local – 01 Segment-03] | 8d | 2026-08-17 | 2026-08-25 | CON-LEG101-LR-5700 | 17d |
| CON-LEG101-LR-5900 |  | Bituminous Base Course [Local – 01 Segment-03] | 8d | 2026-09-01 | 2026-09-09 | CON-LEG101-LR-5800, CON-LEG101-PR-1510, CON-LEG101-LR-5890 | 12d |
|  | 8 | **Electrical Works** |  | 2026-08-17 | 2026-09-17 |  |  |
|  | 2 | **Medium Voltage** |  | 2026-08-17 | 2026-09-17 |  |  |
| CON-LEG101-LR-6900 |  | Excavation for Medium Voltage trench [Local – 01 Segment-03] | 4d | 2026-08-17 | 2026-08-20 | CON-LEG101-PR-1880, CON-LEG101-LR-4220, CON-LEG101-LR-3430, CON-LEG101-EN-1660, CON-LEG101-EN-3440, CON-LEG101-LR-5700 | 12d |
| CON-LEG101-LR-6990 |  | Installation of Medium Voltage Cables Duct Banks [Local – 01 Segment-03] | 5d | 2026-08-22 | 2026-08-26 | CON-LEG101-PR-1400, CON-LEG101-LR-6900, CON-LEG101-PR-1320 | 12d |
| CON-LEG101-LR-7080 |  | Installation of Medium Voltage Cables [Local – 01 Segment-03] | 7d | 2026-08-27 | 2026-09-03 | CON-LEG101-LR-6990 | 12d |
| CON-LEG101-LR-7170 |  | Installation of Straight joints cables [Local – 01 Segment-03] | 2d | 2026-09-05 | 2026-09-06 | CON-LEG101-PR-1450, CON-LEG101-LR-7080, CON-LEG101-PR-1300 | 12d |
| CON-LEG101-LR-7260 |  | Installation of Cable Termination for 13.8 kv 3Cx 500 mm², Al /XLPE/LLDPE [Local – 01 Segment-03] | 3d | 2026-09-07 | 2026-09-09 | CON-LEG101-PR-1450, CON-LEG101-LR-7170, CON-LEG101-PR-1300 | 12d |
| CON-LEG101-LR-7350 |  | Installation of Medium Voltage Switchgears [Local – 01 Segment-03] | 4d | 2026-09-10 | 2026-09-14 | CON-LEG101-PR-1450, CON-LEG101-LR-7260, CON-LEG101-PR-1300 | 12d |
| CON-LEG101-LR-7700 |  | Installation of Cable Termination [Local – 01 Segment-03] | 3d | 2026-09-15 | 2026-09-17 | CON-LEG101-LR-7350, CON-LEG101-PR-1450, CON-LEG101-PR-1300 | 12d |
|  | 4 | **Local – 02** |  | 2026-03-16 | 2026-09-16 |  |  |
|  | 7 | **Road Works** |  | 2026-03-16 | 2026-09-16 |  |  |
|  | 1 | **Earthworks and Site Grading** |  | 2026-03-16 | 2026-08-22 |  |  |
| CON-LEG101-LR-1630 |  | Excavation for Roadway [Local – 02 ] | 21d | 2026-03-16 | 2026-04-13 | CON-LEG101-SD-1000, CON-LEG101-LR-1360, CON-LEG101-EN-1570, CON-LEG101-EN-1580, CON-LEG101-EN-1590, CON-LEG101-EN-1600, CON-LEG101-EN-1610, CON-LEG101-EN-3440, CON-LEG101-LR-1540 SS+5d | 6d |
| CON-LEG101-LR-2950 |  | Parcrels Excavation for Roadway [Local – 02 ] | 18d | 2026-06-22 | 2026-07-12 | CON-LEG101-LR-1630, CON-LEG101-EN-1570, CON-LEG101-EN-1580, CON-LEG101-EN-1590, CON-LEG101-EN-1600, CON-LEG101-EN-1610, CON-LEG101-EN-3440, CON-LEG101-LR-2860, CON-LEG101-LR-4710 | 12d |
| CON-LEG101-LR-4310 |  | Embankments to the roads [Local – 02 ] | 21d | 2026-07-13 | 2026-08-05 | CON-LEG101-LR-2950, CON-LEG101-EN-1570, CON-LEG101-EN-1580, CON-LEG101-EN-1590, CON-LEG101-EN-1600, CON-LEG101-EN-1610, CON-LEG101-EN-3440 | 12d |
| CON-LEG101-LR-4780 |  | Embankments to the parcels for roads [Local – 02 ] | 14d | 2026-08-06 | 2026-08-22 | CON-LEG101-LR-4310, CON-LEG101-EN-1570, CON-LEG101-EN-1580, CON-LEG101-EN-1590, CON-LEG101-EN-1600, CON-LEG101-EN-1610, CON-LEG101-EN-3440, CON-LEG101-LR-4710 | 12d |
|  | 2 | **Asphalt Work** |  | 2026-08-23 | 2026-09-16 |  |  |
| CON-LEG101-LR-5610 |  | Subgrade [Local – 02 ] | 7d | 2026-08-23 | 2026-08-30 | CON-LEG101-LR-3530, CON-LEG101-LR-11170, CON-LEG101-LR-4780, CON-LEG101-LR-1630, CON-LEG101-LR-2950, CON-LEG101-LR-4310, CON-LEG101-LR-4780 FF, CON-LEG101-LR-4230, CON-LEG101-LR-3440, CON-LEG101-EN-3440 | 12d |
| CON-LEG101-LR-5710 |  | Aggregate base course [Local – 02 ] | 9d | 2026-08-31 | 2026-09-09 | CON-LEG101-LR-11220, CON-LEG101-LR-5610, CON-LEG101-PR-1490, CON-LEG101-EN-3470 | 12d |
| CON-LEG101-LR-5810 |  | Prime Coat (MC1) [Local – 02 ] | 2d | 2026-09-10 | 2026-09-12 | CON-LEG101-LR-5710, CON-LEG101-LR-5900 | 12d |
| CON-LEG101-LR-5910 |  | Bituminous Base Course [Local – 02 ] | 4d | 2026-09-13 | 2026-09-16 | CON-LEG101-LR-5810, CON-LEG101-PR-1510 | 13d |
|  | 8 | **Electrical Works** |  | 2026-06-23 | 2026-08-20 |  |  |
|  | 2 | **Medium Voltage** |  | 2026-06-23 | 2026-08-20 |  |  |
| CON-LEG101-LR-6910 |  | Excavation for Medium Voltage trench [Local – 02 ] | 8d | 2026-06-23 | 2026-07-01 | CON-LEG101-PR-1880, CON-LEG101-LR-6890, CON-LEG101-LR-3440, CON-LEG101-LR-4230, CON-LEG101-EN-1660, CON-LEG101-EN-3440 | 12d |
| CON-LEG101-LR-7000 |  | Installation of Medium Voltage Cables Duct Banks [Local – 02 ] | 8d | 2026-07-02 | 2026-07-11 | CON-LEG101-PR-1400, CON-LEG101-LR-6910, CON-LEG101-PR-1320 | 12d |
| CON-LEG101-LR-7090 |  | Installation of Medium Voltage Cables [Local – 02 ] | 13d | 2026-07-12 | 2026-07-26 | CON-LEG101-LR-7000 | 12d |
| CON-LEG101-LR-7180 |  | Installation of Straight joints cables [Local – 02 ] | 6d | 2026-07-27 | 2026-08-02 | CON-LEG101-PR-1450, CON-LEG101-LR-7090, CON-LEG101-PR-1300 | 12d |
| CON-LEG101-LR-7270 |  | Installation of Cable Termination for 13.8 kv 3Cx 500 mm², Al /XLPE/LLDPE [Local – 02 ] | 8d | 2026-08-03 | 2026-08-11 | CON-LEG101-PR-1450, CON-LEG101-LR-7180, CON-LEG101-PR-1300 | 12d |
| CON-LEG101-LR-7360 |  | Installation of Medium Voltage Switchgears [Local – 02 ] | 5d | 2026-08-12 | 2026-08-17 | CON-LEG101-PR-1450, CON-LEG101-LR-7270, CON-LEG101-PR-1300 | 12d |
| CON-LEG101-LR-7710 |  | Installation of Cable Termination [Local – 02 ] | 3d | 2026-08-18 | 2026-08-20 | CON-LEG101-LR-7360, CON-LEG101-PR-1450, CON-LEG101-PR-1300 | 12d |
|  | 2 | **Local – 03** |  | 2026-04-14 | 2026-09-17 |  |  |
|  | 7 | **Road Works** |  | 2026-04-14 | 2026-09-17 |  |  |
|  | 1 | **Earthworks and Site Grading** |  | 2026-04-14 | 2026-09-02 |  |  |
| CON-LEG101-LR-1740 |  | Excavation for Roadway [Local – 03 ] | 14d | 2026-04-14 | 2026-04-29 | CON-LEG101-LR-1630, CON-LEG101-SD-1000, CON-LEG101-EN-1570, CON-LEG101-EN-1580, CON-LEG101-EN-1590, CON-LEG101-EN-1600, CON-LEG101-EN-1610, CON-LEG101-EN-3440 | 11d |
| CON-LEG101-LR-3040 |  | Parcrels Excavation for Roadway [Local – 03 ] | 14d | 2026-07-13 | 2026-07-28 | CON-LEG101-LR-1740, CON-LEG101-EN-1570, CON-LEG101-EN-1580, CON-LEG101-EN-1590, CON-LEG101-EN-1600, CON-LEG101-EN-1610, CON-LEG101-EN-3440, CON-LEG101-LR-2950 | 12d |
| CON-LEG101-LR-4360 |  | Embankments to the roads [Local – 03 ] | 15d | 2026-07-29 | 2026-08-15 | CON-LEG101-LR-3040, CON-LEG101-EN-1570, CON-LEG101-EN-1580, CON-LEG101-EN-1590, CON-LEG101-EN-1600, CON-LEG101-EN-1610, CON-LEG101-EN-3440 | 12d |
| CON-LEG101-LR-4820 |  | Embankments to the parcels for roads [Local – 03 ] | 16d | 2026-08-16 | 2026-09-02 | CON-LEG101-LR-4360, CON-LEG101-EN-1570, CON-LEG101-EN-1580, CON-LEG101-EN-1590, CON-LEG101-EN-1600, CON-LEG101-EN-1610, CON-LEG101-EN-3440 | 12d |
|  | 2 | **Asphalt Work** |  | 2026-09-03 | 2026-09-17 |  |  |
| CON-LEG101-LR-5620 |  | Subgrade [Local – 03 ] | 4d | 2026-09-03 | 2026-09-07 | CON-LEG101-LR-11270, CON-LEG101-LR-1740, CON-LEG101-LR-3040, CON-LEG101-LR-4360, CON-LEG101-LR-4820, CON-LEG101-LR-4240, CON-LEG101-EN-3440 | 12d |
| CON-LEG101-LR-5720 |  | Aggregate base course [Local – 03 ] | 4d | 2026-09-08 | 2026-09-12 | CON-LEG101-LR-11330, CON-LEG101-LR-5620, CON-LEG101-PR-1490, CON-LEG101-EN-3470 | 12d |
| CON-LEG101-LR-5820 |  | Prime Coat (MC1) [Local – 03 ] | 2d | 2026-09-13 | 2026-09-14 | CON-LEG101-LR-5720, CON-LEG101-LR-5810 | 12d |
| CON-LEG101-LR-5920 |  | Bituminous Base Course [Local – 03 ] | 3d | 2026-09-15 | 2026-09-17 | CON-LEG101-LR-5820, CON-LEG101-PR-1510 | 12d |
|  | 8 | **Electrical Works** |  | 2026-08-22 | 2026-09-17 |  |  |
|  | 2 | **Medium Voltage** |  | 2026-08-22 | 2026-09-17 |  |  |
| CON-LEG101-LR-6920 |  | Excavation for Medium Voltage trench [Local – 03 ] | 3d | 2026-08-22 | 2026-08-24 | CON-LEG101-PR-1880, CON-LEG101-LR-6910, CON-LEG101-LR-2120, CON-LEG101-LR-4240, CON-LEG101-EN-1660, CON-LEG101-EN-3440, CON-LEG101-LR-7710 | 12d |
| CON-LEG101-LR-7010 |  | Installation of Medium Voltage Cables Duct Banks [Local – 03 ] | 4d | 2026-08-25 | 2026-08-29 | CON-LEG101-PR-1400, CON-LEG101-LR-6920, CON-LEG101-PR-1320 | 12d |
| CON-LEG101-LR-7100 |  | Installation of Medium Voltage Cables [Local – 03 ] | 5d | 2026-08-30 | 2026-09-03 | CON-LEG101-LR-7010 | 12d |

| ID | WBS | Task | Duration | Start | Finish | Predecessors | Total float |
| --- | --- | --- | --- | --- | --- | --- | --- |
| CON-LEG101-LR-7190 |  | Installation of Straight joints cables [Local – 03 ] | 2d | 2026-09-05 | 2026-09-06 | CON-LEG101-PR-1450, CON-LEG101-LR-7100, CON-LEG101-PR-1300 | 12d |
| CON-LEG101-LR-7280 |  | Installation of Cable Termination for 13.8 kv 3Cx 500 mm², Al /XLPE/LLDPE [Local – 03 ] | 3d | 2026-09-07 | 2026-09-09 | CON-LEG101-PR-1450, CON-LEG101-LR-7190, CON-LEG101-PR-1300 | 12d |
| CON-LEG101-LR-7370 |  | Installation of Medium Voltage Switchgears [Local – 03 ] | 4d | 2026-09-10 | 2026-09-14 | CON-LEG101-PR-1450, CON-LEG101-LR-7280, CON-LEG101-PR-1300 | 12d |
| CON-LEG101-LR-7720 |  | Installation of Cable Termination [Local – 03 ] | 3d | 2026-09-15 | 2026-09-17 | CON-LEG101-LR-7370, CON-LEG101-PR-1450, CON-LEG101-PR-1300 | 12d |
|  | 3 | **Local – 04** |  | 2026-04-30 | 2026-09-17 |  |  |
|  | 7 | **Road Works** |  | 2026-04-30 | 2026-09-17 |  |  |
|  | 1 | **Earthworks and Site Grading** |  | 2026-04-30 | 2026-07-30 |  |  |
| CON-LEG101-LR-1800 |  | Excavation for Roadway [Local – 04 ] | 15d | 2026-04-30 | 2026-05-17 | CON-LEG101-SD-1000, CON-LEG101-LR-1740, CON-LEG101-EN-1570, CON-LEG101-EN-1580, CON-LEG101-EN-1590, CON-LEG101-EN-1600, CON-LEG101-EN-1610, CON-LEG101-EN-3440 | 12d |
| CON-LEG101-LR-3130 |  | Parcrels Excavation for Roadway [Local – 04 ] | 18d | 2026-05-18 | 2026-06-11 | CON-LEG101-LR-1800, CON-LEG101-EN-1570, CON-LEG101-EN-1580, CON-LEG101-EN-1590, CON-LEG101-EN-1600, CON-LEG101-EN-1610, CON-LEG101-EN-3440 | 12d |
| CON-LEG101-LR-4420 |  | Embankments to the roads [Local – 04 ] | 21d | 2026-06-13 | 2026-07-06 | CON-LEG101-LR-3130, CON-LEG101-EN-1570, CON-LEG101-EN-1580, CON-LEG101-EN-1590, CON-LEG101-EN-1600, CON-LEG101-EN-1610, CON-LEG101-EN-3440 | 12d |
| CON-LEG101-LR-4860 |  | Embankments to the parcels for roads [Local – 04 ] | 21d | 2026-07-07 | 2026-07-30 | CON-LEG101-LR-4420, CON-LEG101-EN-1570, CON-LEG101-EN-1580, CON-LEG101-EN-1590, CON-LEG101-EN-1600, CON-LEG101-EN-1610, CON-LEG101-EN-3440 | 12d |
|  | 2 | **Asphalt Work** |  | 2026-08-20 | 2026-09-17 |  |  |
| CON-LEG101-LR-5630 |  | Subgrade [Local – 04 ] | 12d | 2026-08-20 | 2026-09-02 | CON-LEG101-LR-3540, CON-LEG101-LR-11380, CON-LEG101-LR-4860, CON-LEG101-LR-1800, CON-LEG101-LR-3130, CON-LEG101-LR-4420, CON-LEG101-LR-4250, CON-LEG101-LR-3450, CON-LEG101-EN-3440 | 13d |
| CON-LEG101-LR-5730 |  | Aggregate base course [Local – 04 ] | 8d | 2026-09-05 | 2026-09-13 | CON-LEG101-LR-11430, CON-LEG101-LR-5630, CON-LEG101-PR-1490, CON-LEG101-EN-3470 | 12d |
| CON-LEG101-LR-5830 |  | Prime Coat (MC1) [Local – 04 ] | 2d | 2026-09-14 | 2026-09-15 | CON-LEG101-LR-5730 | 12d |
| CON-LEG101-LR-5930 |  | Bituminous Base Course [Local – 04 ] | 2d | 2026-09-16 | 2026-09-17 | CON-LEG101-LR-5830, CON-LEG101-PR-1510 | 12d |
|  | 1 | **Electric Works** |  | 2026-08-22 | 2026-09-17 |  |  |
|  | 2 | **Medium Voltage** |  | 2026-08-22 | 2026-09-17 |  |  |
| CON-LEG101-LR-6930 |  | Excavation for Medium Voltage trench [Local – 04 ] | 4d | 2026-08-22 | 2026-08-25 | CON-LEG101-PR-1880, CON-LEG101-LR-6920 SS, CON-LEG101-LR-3450, CON-LEG101-LR-4250, CON-LEG101-EN-1660, CON-LEG101-EN-3440 | 12d |
| CON-LEG101-LR-7020 |  | Installation of Medium Voltage Cables Duct Banks [Local – 04 ] | 3d | 2026-08-26 | 2026-08-29 | CON-LEG101-PR-1400, CON-LEG101-LR-6930, CON-LEG101-PR-1320 | 12d |
| CON-LEG101-LR-7110 |  | Installation of Medium Voltage Cables [Local – 04 ] | 6d | 2026-08-30 | 2026-09-05 | CON-LEG101-LR-7020 | 12d |
| CON-LEG101-LR-7200 |  | Installation of Straight joints cables [Local – 04 ] | 3d | 2026-09-06 | 2026-09-08 | CON-LEG101-PR-1450, CON-LEG101-LR-7110, CON-LEG101-PR-1300 | 12d |
| CON-LEG101-LR-7290 |  | Installation of Cable Termination for 13.8 kv 3Cx 500 mm², Al /XLPE/LLDPE [Local – 04 ] | 3d | 2026-09-09 | 2026-09-12 | CON-LEG101-PR-1450, CON-LEG101-LR-7200, CON-LEG101-PR-1300 | 12d |
| CON-LEG101-LR-7380 |  | Installation of Medium Voltage Switchgears [Local – 04 ] | 2d | 2026-09-13 | 2026-09-14 | CON-LEG101-PR-1450, CON-LEG101-LR-7290, CON-LEG101-PR-1300 | 12d |
| CON-LEG101-LR-7730 |  | Installation of Cable Termination [Local – 04 ] | 3d | 2026-09-15 | 2026-09-17 | CON-LEG101-LR-7380, CON-LEG101-PR-1450, CON-LEG101-PR-1300 | 12d |
|  | 5 | **Local – 05** |  | 2026-05-18 | 2026-09-17 |  |  |
|  | 7 | **Road Works** |  | 2026-05-18 | 2026-09-17 |  |  |
|  | 1 | **Earthworks and Site Grading** |  | 2026-05-18 | 2026-08-17 |  |  |
| CON-LEG101-LR-1900 |  | Excavation for Roadway [Local – 05 ] | 21d | 2026-05-18 | 2026-06-15 | CON-LEG101-SD-1000, CON-LEG101-LR-1800, CON-LEG101-EN-1570, CON-LEG101-EN-1580, CON-LEG101-EN-1590, CON-LEG101-EN-1600, CON-LEG101-EN-1610, CON-LEG101-EN-3440 | 12d |
| CON-LEG101-LR-3190 |  | Parcrels Excavation for Roadway [Local – 05 ] | 21d | 2026-06-16 | 2026-07-09 | CON-LEG101-LR-1900, CON-LEG101-EN-1570, CON-LEG101-EN-1580, CON-LEG101-EN-1590, CON-LEG101-EN-1600, CON-LEG101-EN-1610, CON-LEG101-EN-3440 | 12d |
| CON-LEG101-LR-4520 |  | Embankments to the roads [Local – 05 ] | 18d | 2026-07-11 | 2026-07-30 | CON-LEG101-LR-3190, CON-LEG101-EN-1570, CON-LEG101-EN-1580, CON-LEG101-EN-1590, CON-LEG101-EN-1600, CON-LEG101-EN-1610, CON-LEG101-EN-3440 | 12d |
| CON-LEG101-LR-4930 |  | Embankments to the parcels for roads [Local – 05 ] | 15d | 2026-08-01 | 2026-08-17 | CON-LEG101-LR-4520, CON-LEG101-EN-1570, CON-LEG101-EN-1580, CON-LEG101-EN-1590, CON-LEG101-EN-1600, CON-LEG101-EN-1610, CON-LEG101-EN-3440, CON-LEG101-LR-4860 | 12d |
|  | 2 | **Asphalt Work** |  | 2026-08-30 | 2026-09-17 |  |  |
| CON-LEG101-LR-5640 |  | Subgrade [Local – 05 ] | 10d | 2026-08-30 | 2026-09-09 | CON-LEG101-LR-3550, CON-LEG101-LR-11470, CON-LEG101-LR-4930, CON-LEG101-LR-1900, CON-LEG101-LR-3190, CON-LEG101-LR-4520, CON-LEG101-LR-4260, CON-LEG101-LR-3460, CON-LEG101-EN-3440 | 13d |
| CON-LEG101-LR-5740 |  | Aggregate base course [Local – 05 ] | 4d | 2026-09-12 | 2026-09-15 | CON-LEG101-LR-11520, CON-LEG101-LR-5640, CON-LEG101-PR-1490, CON-LEG101-EN-3470 | 12d |
| CON-LEG101-LR-5840 |  | Prime Coat (MC1) [Local – 05 ] | 2d | 2026-09-16 | 2026-09-17 | CON-LEG101-LR-5740 | 12d |
| CON-LEG101-LR-5940 |  | Bituminous Base Course [Local – 05 ] | 2d | 2026-09-16 | 2026-09-17 | CON-LEG101-LR-5840 SS, CON-LEG101-PR-1510 | 12d |
|  | 8 | **Electrical Works** |  | 2026-08-30 | 2026-09-17 |  |  |
|  | 2 | **Medium Voltage** |  | 2026-08-30 | 2026-09-17 |  |  |
| CON-LEG101-LR-6940 |  | Excavation for Medium Voltage trench [Local – 05 ] | 4d | 2026-08-30 | 2026-09-02 | CON-LEG101-PR-1880, CON-LEG101-LR-4260, CON-LEG101-LR-11470, CON-LEG101-LR-3550, CON-LEG101-LR-3460, CON-LEG101-LR-6930, CON-LEG101-EN-1660, CON-LEG101-EN-3440 | 12d |
| CON-LEG101-LR-7030 |  | Installation of Medium Voltage Cables Duct Banks [Local – 05 ] | 2d | 2026-09-03 | 2026-09-05 | CON-LEG101-PR-1400, CON-LEG101-LR-6940, CON-LEG101-PR-1320 | 12d |
| CON-LEG101-LR-7120 |  | Installation of Medium Voltage Cables [Local – 05 ] | 4d | 2026-09-06 | 2026-09-09 | CON-LEG101-LR-7030 | 12d |
| CON-LEG101-LR-7210 |  | Installation of Straight joints cables [Local – 05 ] | 2d | 2026-09-10 | 2026-09-12 | CON-LEG101-PR-1450, CON-LEG101-LR-7120, CON-LEG101-PR-1300 | 12d |
| CON-LEG101-LR-7300 |  | Installation of Cable Termination for 13.8 kv 3Cx 500 mm², Al /XLPE/LLDPE [Local – 05 ] | 2d | 2026-09-13 | 2026-09-14 | CON-LEG101-PR-1450, CON-LEG101-LR-7210, CON-LEG101-PR-1300 | 12d |
| CON-LEG101-LR-7390 |  | Installation of Medium Voltage Switchgears [Local – 05 ] | 2d | 2026-09-15 | 2026-09-16 | CON-LEG101-PR-1450, CON-LEG101-LR-7300, CON-LEG101-PR-1300 | 12d |
| CON-LEG101-LR-7740 |  | Installation of Cable Termination [Local – 05 ] | 3d | 2026-09-15 | 2026-09-17 | CON-LEG101-LR-7390 SS, CON-LEG101-PR-1450, CON-LEG101-PR-1300 | 12d |
|  | 6 | **Local – 06** |  | 2026-06-16 | 2026-09-17 |  |  |
|  | 7 | **Road Works** |  | 2026-06-16 | 2026-09-17 |  |  |
|  | 1 | **Earthworks and Site Grading** |  | 2026-06-16 | 2026-08-31 |  |  |
| CON-LEG101-LR-1990 |  | Excavation for Roadway [Local – 06 ] | 14d | 2026-06-16 | 2026-07-01 | CON-LEG101-SD-1000, CON-LEG101-LR-1900, CON-LEG101-EN-1570, CON-LEG101-EN-1580, CON-LEG101-EN-1590, CON-LEG101-EN-1600, CON-LEG101-EN-1610, CON-LEG101-EN-3440 | 12d |
| CON-LEG101-LR-3290 |  | Parcrels Excavation for Roadway [Local – 06 ] | 20d | 2026-07-02 | 2026-07-25 | CON-LEG101-LR-1990, CON-LEG101-EN-1570, CON-LEG101-EN-1580, CON-LEG101-EN-1590, CON-LEG101-EN-1600, CON-LEG101-EN-1610, CON-LEG101-EN-3440 | 12d |
| CON-LEG101-LR-4540 |  | Embankments to the roads [Local – 06 ] | 20d | 2026-07-26 | 2026-08-17 | CON-LEG101-LR-3290, CON-LEG101-EN-1570, CON-LEG101-EN-1580, CON-LEG101-EN-1590, CON-LEG101-EN-1600, CON-LEG101-EN-1610, CON-LEG101-EN-3440 | 12d |
| CON-LEG101-LR-5000 |  | Embankments to the parcels for roads [Local – 06 ] | 12d | 2026-08-18 | 2026-08-31 | CON-LEG101-LR-4540, CON-LEG101-EN-1570, CON-LEG101-EN-1580, CON-LEG101-EN-1590, CON-LEG101-EN-1600, CON-LEG101-EN-1610, CON-LEG101-EN-3440, CON-LEG101-LR-4930 | 12d |
|  | 2 | **Asphalt Work** |  | 2026-09-01 | 2026-09-17 |  |  |
| CON-LEG101-LR-5650 |  | Subgrade [Local – 06 ] | 6d | 2026-09-01 | 2026-09-07 | CON-LEG101-LR-3560, CON-LEG101-LR-11560, CON-LEG101-LR-5000, CON-LEG101-LR-1990, CON-LEG101-LR-3290, CON-LEG101-LR-4540, CON-LEG101-LR-4280, CON-LEG101-LR-3480, CON-LEG101-EN-3440 | 12d |
| CON-LEG101-LR-5750 |  | Aggregate base course [Local – 06 ] | 4d | 2026-09-08 | 2026-09-12 | CON-LEG101-LR-11610, CON-LEG101-LR-5650, CON-LEG101-PR-1490, CON-LEG101-EN-3470 | 12d |
| CON-LEG101-LR-5850 |  | Prime Coat (MC1) [Local – 06 ] | 2d | 2026-09-13 | 2026-09-14 | CON-LEG101-LR-5750 | 12d |
| CON-LEG101-LR-5950 |  | Bituminous Base Course [Local – 06 ] | 3d | 2026-09-15 | 2026-09-17 | CON-LEG101-LR-5850, CON-LEG101-PR-1510 | 12d |
|  | 8 | **Electrical Works** |  | 2026-08-31 | 2026-09-17 |  |  |
|  | 2 | **Medium Voltage** |  | 2026-08-31 | 2026-09-17 |  |  |
| CON-LEG101-LR-6950 |  | Excavation for Medium Voltage trench [Local – 06 ] | 3d | 2026-08-31 | 2026-09-02 | CON-LEG101-PR-1880, CON-LEG101-LR-4280, CON-LEG101-LR-11560, CON-LEG101-LR-3480, CON-LEG101-LR-3560, CON-LEG101-LR-6940 FF, CON-LEG101-EN-1660, CON-LEG101-EN-3440 | 12d |
| CON-LEG101-LR-7040 |  | Installation of Medium Voltage Cables Duct Banks [Local – 06 ] | 3d | 2026-09-03 | 2026-09-06 | CON-LEG101-LR-6950, CON-LEG101-PR-1320 | 12d |
| CON-LEG101-LR-7130 |  | Installation of Medium Voltage Cables [Local – 06 ] | 3d | 2026-09-07 | 2026-09-09 | CON-LEG101-LR-7040 | 12d |
| CON-LEG101-LR-7220 |  | Installation of Straight joints cables [Local – 06 ] | 2d | 2026-09-10 | 2026-09-12 | CON-LEG101-LR-7130, CON-LEG101-PR-1300 | 12d |
| CON-LEG101-LR-7310 |  | Installation of Cable Termination for 13.8 kv 3Cx 500 mm², Al /XLPE/LLDPE [Local – 06 ] | 2d | 2026-09-13 | 2026-09-14 | CON-LEG101-PR-1450, CON-LEG101-LR-7220, CON-LEG101-PR-1300 | 12d |
| CON-LEG101-LR-7400 |  | Installation of Medium Voltage Switchgears [Local – 06 ] | 2d | 2026-09-15 | 2026-09-16 | CON-LEG101-PR-1450, CON-LEG101-LR-7310, CON-LEG101-PR-1300 | 12d |
| CON-LEG101-LR-7750 |  | Installation of Cable Termination [Local – 06 ] | 3d | 2026-09-15 | 2026-09-17 | CON-LEG101-LR-7400 SS, CON-LEG101-PR-1450, CON-LEG101-PR-1300 | 12d |
|  | 7 | **Local – 07** |  | 2026-07-02 | 2026-09-17 |  |  |
|  | 7 | **Road Works** |  | 2026-07-02 | 2026-09-17 |  |  |
|  | 1 | **Earthworks and Site Grading** |  | 2026-07-02 | 2026-08-31 |  |  |

| ID | WBS | Task | Duration | Start | Finish | Predecessors | Total float |
| --- | --- | --- | --- | --- | --- | --- | --- |
| CON-LEG101-LR-2080 |  | Excavation for Roadway [Local – 07 ] | 10d | 2026-07-02 | 2026-07-13 | CON-LEG101-SD-1000, CON-LEG101-LR-1990, CON-LEG101-EN-1570, CON-LEG101-EN-1580, CON-LEG101-EN-1590, CON-LEG101-EN-1600, CON-LEG101-EN-1610, CON-LEG101-EN-3440 | 12d |
| CON-LEG101-LR-3380 |  | Parcrels Excavation for Roadway [Local – 07 ] | 14d | 2026-07-14 | 2026-07-29 | CON-LEG101-LR-2080, CON-LEG101-EN-1570, CON-LEG101-EN-1580, CON-LEG101-EN-1590, CON-LEG101-EN-1600, CON-LEG101-EN-1610, CON-LEG101-EN-3440 | 12d |
| CON-LEG101-LR-4550 |  | Embankments to the roads [Local – 07 ] | 14d | 2026-07-30 | 2026-08-15 | CON-LEG101-LR-3380, CON-LEG101-EN-1570, CON-LEG101-EN-1580, CON-LEG101-EN-1590, CON-LEG101-EN-1600, CON-LEG101-EN-1610, CON-LEG101-EN-3440 | 12d |
| CON-LEG101-LR-5070 |  | Embankments to the parcels for roads [Local – 07 ] | 14d | 2026-08-16 | 2026-08-31 | CON-LEG101-LR-4550, CON-LEG101-EN-1570, CON-LEG101-EN-1580, CON-LEG101-EN-1590, CON-LEG101-EN-1600, CON-LEG101-EN-1610, CON-LEG101-EN-3440 | 12d |
|  | 2 | **Asphalt Work** |  | 2026-09-01 | 2026-09-17 |  |  |
| CON-LEG101-LR-5660 |  | Subgrade [Local – 07 ] | 5d | 2026-09-01 | 2026-09-06 | CON-LEG101-LR-3570, CON-LEG101-LR-11650, CON-LEG101-LR-5070, CON-LEG101-LR-2080, CON-LEG101-LR-3380, CON-LEG101-LR-4550, CON-LEG101-LR-4290, CON-LEG101-LR-3490, CON-LEG101-EN-3440 | 12d |
| CON-LEG101-LR-5760 |  | Aggregate base course [Local – 07 ] | 4d | 2026-09-07 | 2026-09-10 | CON-LEG101-LR-11700, CON-LEG101-LR-5660, CON-LEG101-PR-1490, CON-LEG101-EN-3470 | 12d |
| CON-LEG101-LR-5860 |  | Prime Coat (MC1) [Local – 07 ] | 3d | 2026-09-12 | 2026-09-14 | CON-LEG101-LR-5760 | 12d |
| CON-LEG101-LR-5960 |  | Bituminous Base Course [Local – 07 ] | 3d | 2026-09-15 | 2026-09-17 | CON-LEG101-LR-5860, CON-LEG101-PR-1510 | 12d |
|  | 8 | **Electrical Works** |  | 2026-09-01 | 2026-09-17 |  |  |
|  | 2 | **Medium Voltage** |  | 2026-09-01 | 2026-09-17 |  |  |
| CON-LEG101-LR-6960 |  | Excavation for Medium Voltage trench [Local – 07 ] | 3d | 2026-09-01 | 2026-09-03 | CON-LEG101-PR-1880, CON-LEG101-LR-4290, CON-LEG101-LR-11650, CON-LEG101-LR-3490, CON-LEG101-LR-3570, CON-LEG101-LR-6950 SS, CON-LEG101-EN-1660, CON-LEG101-EN-3440 | 12d |
| CON-LEG101-LR-7050 |  | Installation of Medium Voltage Cables Duct Banks [Local – 07 ] | 3d | 2026-09-05 | 2026-09-07 | CON-LEG101-PR-1400, CON-LEG101-LR-6960, CON-LEG101-PR-1320 | 12d |
| CON-LEG101-LR-7140 |  | Installation of Medium Voltage Cables [Local – 07 ] | 3d | 2026-09-08 | 2026-09-10 | CON-LEG101-LR-7050 | 12d |
| CON-LEG101-LR-7230 |  | Installation of Straight joints cables [Local – 07 ] | 2d | 2026-09-12 | 2026-09-13 | CON-LEG101-PR-1450, CON-LEG101-LR-7140, CON-LEG101-PR-1300 | 12d |
| CON-LEG101-LR-7320 |  | Installation of Cable Termination for 13.8 kv 3Cx 500 mm², Al /XLPE/LLDPE [Local – 07 ] | 2d | 2026-09-14 | 2026-09-15 | CON-LEG101-PR-1450, CON-LEG101-LR-7230, CON-LEG101-PR-1300 | 12d |
| CON-LEG101-LR-7410 |  | Installation of Medium Voltage Switchgears [Local – 07 ] | 2d | 2026-09-16 | 2026-09-17 | CON-LEG101-PR-1450, CON-LEG101-LR-7320, CON-LEG101-PR-1300 | 12d |
| CON-LEG101-LR-7760 |  | Installation of Cable Termination [Local – 07 ] | 2d | 2026-09-16 | 2026-09-17 | CON-LEG101-LR-7410 SS, CON-LEG101-PR-1450, CON-LEG101-PR-1300 | 12d |
|  | 8 | **Local – 08** |  | 2026-06-03 | 2026-09-17 |  |  |
|  | 7 | **Road Works** |  | 2026-06-03 | 2026-09-17 |  |  |
|  | 1 | **Earthworks and Site Grading** |  | 2026-06-03 | 2026-08-31 |  |  |
| CON-LEG101-LR-2180 |  | Excavation for Roadway [Local – 08 ] | 10d | 2026-06-03 | 2026-06-14 | CON-LEG101-SD-1000, CON-LEG101-LR-1900 SS+10d, CON-LEG101-EN-1570, CON-LEG101-EN-1580, CON-LEG101-EN-1590, CON-LEG101-EN-1600, CON-LEG101-EN-1610, CON-LEG101-EN-3440 | 12d |
| CON-LEG101-LR-3470 |  | Parcrels Excavation for Roadway [Local – 08 ] | 10d | 2026-07-30 | 2026-08-10 | CON-LEG101-LR-2180, CON-LEG101-EN-1570, CON-LEG101-EN-1580, CON-LEG101-EN-1590, CON-LEG101-EN-1600, CON-LEG101-EN-1610, CON-LEG101-EN-3440, CON-LEG101-LR-3380 | 12d |
| CON-LEG101-LR-4560 |  | Embankments to the roads [Local – 08 ] | 8d | 2026-08-11 | 2026-08-19 | CON-LEG101-LR-3470, CON-LEG101-EN-1570, CON-LEG101-EN-1580, CON-LEG101-EN-1590, CON-LEG101-EN-1600, CON-LEG101-EN-1610, CON-LEG101-EN-3440 | 12d |
| CON-LEG101-LR-5140 |  | Embankments to the parcels for roads [Local – 08 ] | 10d | 2026-08-20 | 2026-08-31 | CON-LEG101-LR-4560, CON-LEG101-EN-1570, CON-LEG101-EN-1580, CON-LEG101-EN-1590, CON-LEG101-EN-1600, CON-LEG101-EN-1610, CON-LEG101-EN-3440 | 12d |
|  | 2 | **Asphalt Work** |  | 2026-09-01 | 2026-09-17 |  |  |
| CON-LEG101-LR-5670 |  | Subgrade [Local – 08 ] | 7d | 2026-09-01 | 2026-09-08 | CON-LEG101-LR-11740, CON-LEG101-LR-5140, CON-LEG101-LR-2180, CON-LEG101-LR-3470, CON-LEG101-LR-4560, CON-LEG101-LR-4300, CON-LEG101-EN-3440 | 12d |
| CON-LEG101-LR-5770 |  | Aggregate base course [Local – 08 ] | 4d | 2026-09-09 | 2026-09-13 | CON-LEG101-LR-11790, CON-LEG101-LR-5670, CON-LEG101-PR-1490, CON-LEG101-EN-3470 | 12d |
| CON-LEG101-LR-5870 |  | Prime Coat (MC1) [Local – 08 ] | 2d | 2026-09-14 | 2026-09-15 | CON-LEG101-LR-5770 | 12d |
| CON-LEG101-LR-5970 |  | Bituminous Base Course [Local – 08 ] | 2d | 2026-09-16 | 2026-09-17 | CON-LEG101-LR-5870, CON-LEG101-PR-1510 | 12d |
|  | 6 | **Deep Infrastructure network** |  | 2026-04-01 | 2026-11-18 |  |  |
|  | 1 | **Local – 01** |  | 2026-04-01 | 2026-08-22 |  |  |
|  | 1 | **LOCAL - 01 Segment-01 (From 0+000 to 1+066)** |  | 2026-04-01 | 2026-08-03 |  |  |
|  | 1 | **Stormwater Utilities** |  | 2026-04-01 | 2026-08-03 |  |  |
|  | 2 | **Pipe Work** |  | 2026-04-01 | 2026-06-08 |  |  |
| CON-LEG101-LR-3580 |  | Excavation for Stormwater Utilities Network [Local – 01 Segment-01] | 10d | 2026-04-01 | 2026-04-12 | CON-LEG101-LR-4070, CON-LEG101-SD-1000, CON-LEG101-LR-1360, CON-LEG101-LR-2760, CON-LEG101-EN-1780, CON-LEG101-EN-1790, CON-LEG101-EN-1800, CON-LEG101-EN-3440 | 7d |
| CON-LEG101-LR-3680 |  | Granular bedding for Stormwater Utilities Network [Local – 01 Segment-01] | 10d | 2026-04-13 | 2026-04-23 | CON-LEG101-EN-1780, CON-LEG101-LR-3580 | 20d |
| CON-LEG101-LR-3780 |  | Installation of Pipe for Stormwater Utilities Network [Local – 01 Segment-01] | 10d | 2026-05-05 | 2026-05-16 | CON-LEG101-PR-2100, CON-LEG101-PR-2110, CON-LEG101-LR-3680, CON-LEG101-PR-1780, CON-LEG101-PR-1810 | 11d |
| CON-LEG101-LR-3880 |  | Testing for Stormwater Utilities Network [Local – 01 Segment-01] | 4d | 2026-05-17 | 2026-05-20 | CON-LEG101-LR-3780 | 15d |
| CON-LEG101-LR-3980 |  | Granular Surround for Stormwater Utilities Network [Local – 01 Segment-01] | 4d | 2026-05-21 | 2026-05-25 | CON-LEG101-LR-3880, CON-LEG101-EN-3450 | 15d |
| CON-LEG101-LR-4090 |  | Installation of Micron Marker Magnetic Tape [Local – 01 Segment-01] | 2d | 2026-05-26 | 2026-06-01 | CON-LEG101-LR-3980 | 15d |
| CON-LEG101-LR-4200 |  | Backfilling to Subgrade Elevation [Local – 01 Segment-01] | 6d | 2026-06-02 | 2026-06-08 | CON-LEG101-LR-4090, CON-LEG101-EN-3440 | 15d |
|  | 1 | **Manhole** |  | 2026-04-13 | 2026-06-30 |  |  |
| CON-LEG101-LR-10890 |  | Excavation of Inlet Manholes [Local – 01 Segment-01] | 15d | 2026-04-13 | 2026-04-29 | CON-LEG101-LR-3580 | 19d |
| CON-LEG101-LR-10900 |  | PC of Inlet Manholes [Local – 01 Segment-01] | 6d | 2026-04-30 | 2026-05-06 | CON-LEG101-LR-10890 | 19d |
| CON-LEG101-LR-4320 |  | Installation of Inlet Manholes [Local – 01 Segment-01] | 14d | 2026-05-17 | 2026-06-06 | CON-LEG101-LR-10900, CON-LEG101-LR-3780, CON-LEG101-PR-1980 | 11d |
| CON-LEG101-LR-10910 |  | Backfilling of Inlet Manholes [Local – 01 Segment-01] | 6d | 2026-06-07 | 2026-06-13 | CON-LEG101-LR-4320 | 11d |
| CON-LEG101-LR-10920 |  | Finishing and Testing of Inlet Manholes [Local – 01 Segment-01] | 15d | 2026-06-14 | 2026-06-30 | CON-LEG101-LR-10910 | 17d |
|  | 3 | **Concrete Chambers/Outfalls** |  | 2026-06-14 | 2026-08-03 |  |  |
| CON-LEG101-LR-10840 |  | Excavation of Concrete chambers [Local – 01 Segment-01] | 6d | 2026-06-14 | 2026-06-20 | CON-LEG101-LR-4200, CON-LEG101-LR-10910 | 12d |
| CON-LEG101-LR-10850 |  | PC of Concrete chambers [Local – 01 Segment-01] | 2d | 2026-06-21 | 2026-06-22 | CON-LEG101-LR-10840 | 12d |
| CON-LEG101-LR-4430 |  | Installation of Concrete chambers [Local – 01 Segment-01] | 12d | 2026-06-23 | 2026-07-06 | CON-LEG101-LR-10850, CON-LEG101-LR-3780, CON-LEG101-PR-1990 | 12d |
| CON-LEG101-LR-10870 |  | Installation UPVC Pipes to Concrete chambers [Local – 01 Segment-01] | 8d | 2026-07-07 | 2026-07-15 | CON-LEG101-LR-4430, CON-LEG101-LR-10920 | 12d |
| CON-LEG101-LR-10860 |  | Backfilling to Concrete chambers [Local – 01 Segment-01] | 6d | 2026-07-16 | 2026-07-22 | CON-LEG101-LR-10870, CON-LEG101-LR-4430 | 12d |
| CON-LEG101-LR-10880 |  | FInishing and Testing of Concrete chambers [Local – 01 Segment-01] | 10d | 2026-07-23 | 2026-08-03 | CON-LEG101-LR-10870, CON-LEG101-LR-4430, CON-LEG101-LR-10860 | 14d |
|  | 4 | **Sanitary Sewerage** |  | 2026-04-13 | 2026-06-15 |  |  |
|  | 2 | **Pipe Work** |  | 2026-04-13 | 2026-06-15 |  |  |
| CON-LEG101-LR-2780 |  | Excavation for Sanitary Sewerage Network [Local – 01 Segment-01] | 10d | 2026-04-13 | 2026-04-23 | CON-LEG101-LR-3580, CON-LEG101-EN-1750, CON-LEG101-EN-1760, CON-LEG101-EN-1770, CON-LEG101-EN-3440 | 15d |
| CON-LEG101-LR-2870 |  | Granular bedding for Sanitary Sewerage Network [Local – 01 Segment-01] | 4d | 2026-04-25 | 2026-04-28 | CON-LEG101-LR-2780 | 15d |
| CON-LEG101-LR-2960 |  | Installation of Pipe for Sanitary Sewerage Network [Local – 01 Segment-01] | 10d | 2026-05-06 | 2026-05-17 | CON-LEG101-PR-2560, CON-LEG101-LR-2870, CON-LEG101-PR-1720 | 9d |
| CON-LEG101-LR-3050 |  | Testing for Sanitary Sewerage Network [Local – 01 Segment-01] | 4d | 2026-05-18 | 2026-05-21 | CON-LEG101-LR-2960 | 9d |
| CON-LEG101-LR-3140 |  | Concrete encasement, pipe dia 200 and 350 mm [Local – 01 Segment-01] | 3d | 2026-05-23 | 2026-05-25 | CON-LEG101-LR-3050, CON-LEG101-EN-3450, CON-LEG101-PR-1430 | 9d |
| CON-LEG101-LR-3230 |  | Granular Surround for Sanitary Sewerage Network [Local – 01 Segment-01] | 4d | 2026-05-26 | 2026-06-03 | CON-LEG101-LR-3140, CON-LEG101-EN-3450 | 9d |
| CON-LEG101-LR-3320 |  | Installation of Micron Marker Magnetic Tape [Local – 01 Segment-01] | 2d | 2026-06-04 | 2026-06-06 | CON-LEG101-LR-3230 | 9d |
| CON-LEG101-LR-3410 |  | Backfilling to Subgrade Elevation [Local – 01 Segment-01] | 8d | 2026-06-07 | 2026-06-15 | CON-LEG101-LR-3320, CON-LEG101-EN-3440 | 9d |
|  | 1 | **Manhole** |  | 2026-05-18 | 2026-06-14 |  |  |
| CON-LEG101-LR-3500 |  | Installation of Fiberglass Manholes [Local – 01 Segment-01] | 20d | 2026-05-18 | 2026-06-14 | CON-LEG101-PR-2570, CON-LEG101-LR-2960, CON-LEG101-PR-1750 | 14d |
|  | 2 | **LOCAL - 01 Segment-02 (From 1+066 to 2+133)** |  | 2026-04-27 | 2026-08-15 |  |  |
|  | 1 | **Stormwater Utilities** |  | 2026-04-27 | 2026-08-15 |  |  |
|  | 2 | **Pipe Work** |  | 2026-04-27 | 2026-06-14 |  |  |

| ID | WBS | Task | Duration | Start | Finish | Predecessors | Total float |
| --- | --- | --- | --- | --- | --- | --- | --- |
| CON-LEG101-LR-3590 |  | Excavation for Stormwater Utilities Network [Local – 01 Segment-02] | 10d | 2026-04-27 | 2026-05-07 | CON-LEG101-LR-4170, CON-LEG101-LR-4640, CON-LEG101-SD-1000, CON-LEG101-LR-1450, CON-LEG101-EN-1780, CON-LEG101-EN-1790, CON-LEG101-EN-1800, CON-LEG101-EN-3440 | 0d |
| CON-LEG101-LR-3690 |  | Granular bedding for Stormwater Utilities Network [Local – 01 Segment-02] | 4d | 2026-05-09 | 2026-05-12 | CON-LEG101-LR-3590 | 6d |
| CON-LEG101-LR-3790 |  | Installation of Pipe for Stormwater Utilities Network [Local – 01 Segment-02] | 8d | 2026-05-13 | 2026-05-21 | CON-LEG101-PR-2100, CON-LEG101-PR-2110, CON-LEG101-LR-3690, CON-LEG101-PR-1780, CON-LEG101-PR-1810 | 6d |
| CON-LEG101-LR-3890 |  | Testing for Stormwater Utilities Network [Local – 01 Segment-02] | 4d | 2026-05-23 | 2026-05-26 | CON-LEG101-LR-3790 | 6d |
| CON-LEG101-LR-3990 |  | Granular Surround for Stormwater Utilities Network [Local – 01 Segment-02] | 4d | 2026-06-01 | 2026-06-04 | CON-LEG101-LR-3890, CON-LEG101-EN-3450 | 6d |
| CON-LEG101-LR-4100 |  | Installation of Micron Marker Magnetic Tape [Local – 01 Segment-02] | 2d | 2026-06-06 | 2026-06-07 | CON-LEG101-LR-3990 | 6d |
| CON-LEG101-LR-4210 |  | Backfilling to Subgrade Elevation [Local – 01 Segment-02] | 6d | 2026-06-08 | 2026-06-14 | CON-LEG101-LR-4100, CON-LEG101-EN-3440 | 6d |
|  | 1 | **Manhole** |  | 2026-05-09 | 2026-06-28 |  |  |
| CON-LEG101-LR-10930 |  | Excavation of Inlet Manholes [Local – 01 Segment-02] | 6d | 2026-05-09 | 2026-05-14 | CON-LEG101-LR-3590 | 9d |
| CON-LEG101-LR-10940 |  | PC of Inlet Manholes [Local – 01 Segment-02] | 3d | 2026-05-16 | 2026-05-18 | CON-LEG101-LR-10930 | 9d |
| CON-LEG101-LR-4330 |  | Installation of Inlet Manholes [Local – 01 Segment-02] | 10d | 2026-05-23 | 2026-06-07 | CON-LEG101-LR-10940, CON-LEG101-LR-3790, CON-LEG101-PR-1980 | 6d |
| CON-LEG101-LR-10960 |  | Backfilling of Inlet Manholes [Local – 01 Segment-02] | 6d | 2026-06-08 | 2026-06-14 | CON-LEG101-LR-4330 | 6d |
| CON-LEG101-LR-10970 |  | Finishing and Testing of Inlet Manholes [Local – 01 Segment-02] | 12d | 2026-06-15 | 2026-06-28 | CON-LEG101-LR-10960 | 15d |
|  | 3 | **Concrete Chambers/Outfalls** |  | 2026-06-15 | 2026-08-15 |  |  |
| CON-LEG101-LR-10980 |  | Excavation of Concrete chambers [Local – 01 Segment-02] | 10d | 2026-06-15 | 2026-06-25 | CON-LEG101-LR-10960, CON-LEG101-LR-4210 | 12d |
| CON-LEG101-LR-10990 |  | PC of Concrete chambers [Local – 01 Segment-02] | 2d | 2026-06-27 | 2026-06-28 | CON-LEG101-LR-10980 | 12d |
| CON-LEG101-LR-4440 |  | Installation of Concrete chambers [Local – 01 Segment-02] | 15d | 2026-06-29 | 2026-07-15 | CON-LEG101-LR-10990, CON-LEG101-LR-4330, CON-LEG101-LR-3790, CON-LEG101-PR-1990 | 12d |
| CON-LEG101-LR-11010 |  | Installation UPVC Pipes to Concrete chambers [Local – 01 Segment-02] | 8d | 2026-07-16 | 2026-07-25 | CON-LEG101-LR-10980, CON-LEG101-LR-4440 | 12d |
| CON-LEG101-LR-11020 |  | Backfilling to Concrete chambers [Local – 01 Segment-02] | 6d | 2026-07-26 | 2026-08-01 | CON-LEG101-LR-11010, CON-LEG101-LR-4440, CON-LEG101-LR-10970 | 12d |
| CON-LEG101-LR-11030 |  | FInishing and Testing of Concrete chambers [Local – 01 Segment-02] | 10d | 2026-08-04 | 2026-08-15 | CON-LEG101-LR-11010, CON-LEG101-LR-11020, CON-LEG101-LR-10880 | 14d |
|  | 4 | **Sanitary Sewerage** |  | 2026-04-27 | 2026-06-16 |  |  |
|  | 2 | **Pipe Work** |  | 2026-04-27 | 2026-06-14 |  |  |
| CON-LEG101-LR-2790 |  | Excavation for Sanitary Sewerage Network [Local – 01 Segment-02] | 7d | 2026-04-27 | 2026-05-04 | CON-LEG101-LR-4170, CON-LEG101-LR-4640, CON-LEG101-EN-1750, CON-LEG101-EN-1760, CON-LEG101-EN-1770, CON-LEG101-EN-3440 | 6d |
| CON-LEG101-LR-2880 |  | Granular bedding for Sanitary Sewerage Network [Local – 01 Segment-02] | 4d | 2026-05-05 | 2026-05-09 | CON-LEG101-LR-2790 | 6d |
| CON-LEG101-LR-2970 |  | Installation of Pipe for Sanitary Sewerage Network [Local – 01 Segment-02] | 8d | 2026-05-10 | 2026-05-18 | CON-LEG101-PR-2560, CON-LEG101-LR-2880, CON-LEG101-PR-1720 | 6d |
| CON-LEG101-LR-3060 |  | Testing for Sanitary Sewerage Network [Local – 01 Segment-02] | 4d | 2026-05-19 | 2026-05-23 | CON-LEG101-LR-2970 | 6d |
| CON-LEG101-LR-3150 |  | Concrete encasement, pipe dia 200 and 350 mm [Local – 01 Segment-02] | 3d | 2026-05-24 | 2026-05-26 | CON-LEG101-LR-3060, CON-LEG101-EN-3450, CON-LEG101-PR-1430 | 6d |
| CON-LEG101-LR-3240 |  | Granular Surround for Sanitary Sewerage Network [Local – 01 Segment-02] | 4d | 2026-06-01 | 2026-06-04 | CON-LEG101-LR-3150, CON-LEG101-EN-3450 | 6d |
| CON-LEG101-LR-3330 |  | Installation of Micron Marker Magnetic Tape [Local – 01 Segment-02] | 2d | 2026-06-06 | 2026-06-07 | CON-LEG101-LR-3240 | 6d |
| CON-LEG101-LR-3420 |  | Backfilling to Subgrade Elevation [Local – 01 Segment-02] | 6d | 2026-06-08 | 2026-06-14 | CON-LEG101-LR-3330, CON-LEG101-EN-3440 | 6d |
|  | 1 | **Manhole** |  | 2026-05-19 | 2026-06-16 |  |  |
| CON-LEG101-LR-3510 |  | Installation of Fiberglass Manholes [Local – 01 Segment-02] | 21d | 2026-05-19 | 2026-06-16 | CON-LEG101-PR-2570, CON-LEG101-LR-2970, CON-LEG101-PR-1750 | 13d |
|  | 3 | **LOCAL - 01 Segment-03 (From 2+133 to 3+200)** |  | 2026-05-09 | 2026-08-22 |  |  |
|  | 1 | **Stormwater Utilities** |  | 2026-05-09 | 2026-08-22 |  |  |
|  | 2 | **Pipe Work** |  | 2026-05-09 | 2026-06-25 |  |  |
| CON-LEG101-LR-3600 |  | Excavation for Stormwater Utilities Network [Local – 01 Segment-03] | 10d | 2026-05-09 | 2026-05-19 | CON-LEG101-LR-3590, CON-LEG101-SD-1000, CON-LEG101-LR-1540, CON-LEG101-EN-1780, CON-LEG101-EN-1790, CON-LEG101-EN-1800, CON-LEG101-EN-3440 | 0d |
| CON-LEG101-LR-3700 |  | Granular bedding for Stormwater Utilities Network [Local – 01 Segment-03] | 4d | 2026-05-20 | 2026-05-24 | CON-LEG101-LR-3600 | 12d |
| CON-LEG101-LR-3800 |  | Installation of Pipe for Stormwater Utilities Network [Local – 01 Segment-03] | 8d | 2026-05-25 | 2026-06-07 | CON-LEG101-PR-2100, CON-LEG101-PR-2110, CON-LEG101-LR-3700, CON-LEG101-PR-1780, CON-LEG101-PR-1810 | 12d |
| CON-LEG101-LR-3900 |  | Testing for Stormwater Utilities Network [Local – 01 Segment-03] | 4d | 2026-06-08 | 2026-06-11 | CON-LEG101-LR-3800 | 16d |
| CON-LEG101-LR-4000 |  | Granular Surround for Stormwater Utilities Network [Local – 01 Segment-03] | 4d | 2026-06-13 | 2026-06-16 | CON-LEG101-LR-3900, CON-LEG101-EN-3450 | 16d |
| CON-LEG101-LR-4110 |  | Installation of Micron Marker Magnetic Tape [Local – 01 Segment-03] | 2d | 2026-06-17 | 2026-06-18 | CON-LEG101-LR-4000 | 16d |
| CON-LEG101-LR-4220 |  | Backfilling to Subgrade Elevation [Local – 01 Segment-03] | 6d | 2026-06-20 | 2026-06-25 | CON-LEG101-LR-4110, CON-LEG101-EN-3440 | 16d |
|  | 1 | **Manhole** |  | 2026-05-20 | 2026-07-07 |  |  |
| CON-LEG101-LR-11040 |  | Excavation of Inlet Manholes [Local – 01 Segment-03] | 6d | 2026-05-20 | 2026-05-26 | CON-LEG101-LR-3600 | 15d |
| CON-LEG101-LR-11050 |  | PC of Inlet Manholes [Local – 01 Segment-03] | 3d | 2026-06-01 | 2026-06-03 | CON-LEG101-LR-11040 | 15d |
| CON-LEG101-LR-4340 |  | Installation of Inlet Manholes [Local – 01 Segment-03] | 14d | 2026-06-08 | 2026-06-23 | CON-LEG101-LR-11050, CON-LEG101-LR-3800, CON-LEG101-PR-1980 | 12d |
| CON-LEG101-LR-11060 |  | Backfilling of Inlet Manholes [Local – 01 Segment-03] | 6d | 2026-06-24 | 2026-06-30 | CON-LEG101-LR-4340 | 12d |
| CON-LEG101-LR-11070 |  | Finishing and Testing of Inlet Manholes [Local – 01 Segment-03] | 6d | 2026-07-01 | 2026-07-07 | CON-LEG101-LR-11060, CON-LEG101-LR-4340, CON-LEG101-LR-10970 | 13d |
|  | 3 | **Concrete Chambers/Outfalls** |  | 2026-06-24 | 2026-08-22 |  |  |
| CON-LEG101-LR-11080 |  | Excavation of Concrete chambers [Local – 01 Segment-03] | 6d | 2026-06-24 | 2026-06-30 | CON-LEG101-LR-4340 | 16d |
| CON-LEG101-LR-11090 |  | PC of Concrete chambers [Local – 01 Segment-03] | 2d | 2026-07-01 | 2026-07-02 | CON-LEG101-LR-11080 | 16d |
| CON-LEG101-LR-4450 |  | Installation of Concrete chambers [Local – 01 Segment-03] | 10d | 2026-07-04 | 2026-07-14 | CON-LEG101-LR-11090, CON-LEG101-LR-4340, CON-LEG101-LR-3800, CON-LEG101-PR-1990 | 16d |
| CON-LEG101-LR-11110 |  | Installation UPVC Pipes to Concrete chambers [Local – 01 Segment-03] | 8d | 2026-07-15 | 2026-07-23 | CON-LEG101-LR-11080, CON-LEG101-LR-4450, CON-LEG101-LR-11070 | 16d |
| CON-LEG101-LR-11120 |  | Backfilling to Concrete chambers [Local – 01 Segment-03] | 6d | 2026-07-25 | 2026-07-30 | CON-LEG101-LR-11110 | 16d |
| CON-LEG101-LR-11130 |  | FInishing and Testing of Concrete chambers [Local – 01 Segment-03] | 6d | 2026-08-16 | 2026-08-22 | CON-LEG101-LR-11110, CON-LEG101-LR-11120, CON-LEG101-LR-11030 | 14d |
|  | 4 | **Sanitary Sewerage** |  | 2026-05-20 | 2026-07-14 |  |  |
|  | 2 | **Pipe Work** |  | 2026-05-20 | 2026-07-13 |  |  |
| CON-LEG101-LR-2800 |  | Excavation for Sanitary Sewerage Network [Local – 01 Segment-03] | 10d | 2026-05-20 | 2026-06-04 | CON-LEG101-LR-3600, CON-LEG101-EN-1750, CON-LEG101-EN-1760, CON-LEG101-EN-1770, CON-LEG101-EN-3440 | 0d |
| CON-LEG101-LR-2890 |  | Granular bedding for Sanitary Sewerage Network [Local – 01 Segment-03] | 4d | 2026-06-06 | 2026-06-09 | CON-LEG101-LR-2800 | 0d |
| CON-LEG101-LR-2980 |  | Installation of Pipe for Sanitary Sewerage Network [Local – 01 Segment-03] | 10d | 2026-06-10 | 2026-06-21 | CON-LEG101-PR-2560, CON-LEG101-LR-2890, CON-LEG101-PR-1720 | 0d |
| CON-LEG101-LR-3070 |  | Testing for Sanitary Sewerage Network [Local – 01 Segment-03] | 4d | 2026-06-22 | 2026-06-25 | CON-LEG101-LR-2980 | 1d |
| CON-LEG101-LR-3160 |  | Concrete encasement, pipe dia 200 and 350 mm [Local – 01 Segment-03] | 3d | 2026-06-27 | 2026-06-29 | CON-LEG101-LR-3070, CON-LEG101-EN-3450, CON-LEG101-PR-1430 | 1d |
| CON-LEG101-LR-3250 |  | Granular Surround for Sanitary Sewerage Network [Local – 01 Segment-03] | 4d | 2026-06-30 | 2026-07-04 | CON-LEG101-LR-3160, CON-LEG101-EN-3450 | 1d |
| CON-LEG101-LR-3340 |  | Installation of Micron Marker Magnetic Tape [Local – 01 Segment-03] | 2d | 2026-07-05 | 2026-07-06 | CON-LEG101-LR-3250 | 1d |
| CON-LEG101-LR-3430 |  | Backfilling to Subgrade Elevation [Local – 01 Segment-03] | 6d | 2026-07-07 | 2026-07-13 | CON-LEG101-LR-3340, CON-LEG101-EN-3440 | 1d |
|  | 1 | **Manhole** |  | 2026-06-22 | 2026-07-14 |  |  |
| CON-LEG101-LR-3520 |  | Installation of Fiberglass Manholes [Local – 01 Segment-03] | 20d | 2026-06-22 | 2026-07-14 | CON-LEG101-PR-2570, CON-LEG101-LR-2980, CON-LEG101-PR-1750 | 0d |
|  | 2 | **Local – 02** |  | 2026-04-14 | 2026-09-01 |  |  |
|  | 1 | **Stormwater Utilities** |  | 2026-04-14 | 2026-09-01 |  |  |
|  | 2 | **Pipe Work** |  | 2026-04-14 | 2026-06-06 |  |  |

| ID | WBS | Task | Duration | Start | Finish | Predecessors | Total float |
| --- | --- | --- | --- | --- | --- | --- | --- |
| CON-LEG101-LR-3610 |  | Excavation for Stormwater Utilities Network [Local – 02 ] | 6d | 2026-04-14 | 2026-04-20 | CON-LEG101-LR-3580, CON-LEG101-SD-1000, CON-LEG101-LR-1630, CON-LEG101-EN-1780, CON-LEG101-EN-1790, CON-LEG101-EN-1800, CON-LEG101-EN-3440 | 6d |
| CON-LEG101-LR-3710 |  | Granular bedding for Stormwater Utilities Network [Local – 02 ] | 4d | 2026-04-21 | 2026-04-25 | CON-LEG101-LR-3610 | 18d |
| CON-LEG101-LR-3810 |  | Installation of Pipe for Stormwater Utilities Network [Local – 02 ] | 8d | 2026-05-05 | 2026-05-13 | CON-LEG101-PR-2100, CON-LEG101-PR-2110, CON-LEG101-LR-3710, CON-LEG101-PR-1780, CON-LEG101-PR-1810 | 10d |
| CON-LEG101-LR-3910 |  | Testing for Stormwater Utilities Network [Local – 02 ] | 4d | 2026-05-14 | 2026-05-18 | CON-LEG101-LR-3810 | 14d |
| CON-LEG101-LR-4010 |  | Granular Surround for Stormwater Utilities Network [Local – 02 ] | 4d | 2026-05-19 | 2026-05-23 | CON-LEG101-LR-3910, CON-LEG101-EN-3450 | 14d |
| CON-LEG101-LR-4120 |  | Installation of Micron Marker Magnetic Tape [Local – 02 ] | 2d | 2026-05-24 | 2026-05-25 | CON-LEG101-LR-4010 | 14d |
| CON-LEG101-LR-4230 |  | Backfilling to Subgrade Elevation [Local – 02 ] | 6d | 2026-05-26 | 2026-06-06 | CON-LEG101-LR-4120, CON-LEG101-EN-3440 | 14d |
|  | 1 | **Manhole** |  | 2026-04-21 | 2026-07-19 |  |  |
| CON-LEG101-LR-11140 |  | Excavation of Inlet Manholes [Local – 02 ] | 10d | 2026-04-21 | 2026-05-02 | CON-LEG101-LR-3610 | 15d |
| CON-LEG101-LR-11150 |  | PC of Inlet Manholes [Local – 02 ] | 5d | 2026-05-03 | 2026-05-07 | CON-LEG101-LR-11140 | 15d |
| CON-LEG101-LR-4350 |  | Installation of Inlet Manholes [Local – 02 ] | 14d | 2026-05-14 | 2026-06-03 | CON-LEG101-LR-11150, CON-LEG101-LR-3810, CON-LEG101-PR-1980 | 10d |
| CON-LEG101-LR-11170 |  | Backfilling of Inlet Manholes [Local – 02 ] | 6d | 2026-06-04 | 2026-06-10 | CON-LEG101-LR-4350 | 10d |
| CON-LEG101-LR-11180 |  | Finishing and Testing of Inlet Manholes [Local – 02 ] | 10d | 2026-07-08 | 2026-07-19 | CON-LEG101-LR-11170, CON-LEG101-LR-4350, CON-LEG101-LR-11070 | 13d |
|  | 3 | **Concrete Chambers/Outfalls** |  | 2026-07-20 | 2026-09-01 |  |  |
| CON-LEG101-LR-11190 |  | Excavation of Concrete chambers [Local – 02 ] | 6d | 2026-07-20 | 2026-07-26 | CON-LEG101-LR-4350, CON-LEG101-LR-11180 | 13d |
| CON-LEG101-LR-11200 |  | PC of Concrete chambers [Local – 02 ] | 2d | 2026-07-27 | 2026-07-28 | CON-LEG101-LR-11190 | 13d |
| CON-LEG101-LR-4460 |  | Installation of Concrete chambers [Local – 02 ] | 8d | 2026-07-29 | 2026-08-06 | CON-LEG101-LR-11200, CON-LEG101-LR-4350, CON-LEG101-LR-3810, CON-LEG101-PR-1990 | 13d |
| CON-LEG101-LR-11210 |  | Installation UPVC Pipes to Concrete chambers [Local – 02 ] | 8d | 2026-08-08 | 2026-08-16 | CON-LEG101-LR-11190, CON-LEG101-LR-4460 | 13d |
| CON-LEG101-LR-11220 |  | Backfilling to Concrete chambers [Local – 02 ] | 6d | 2026-08-17 | 2026-08-23 | CON-LEG101-LR-11210, CON-LEG101-LR-4460 | 13d |
| CON-LEG101-LR-11230 |  | FInishing and Testing of Concrete chambers [Local – 02 ] | 8d | 2026-08-24 | 2026-09-01 | CON-LEG101-LR-11210, CON-LEG101-LR-11220, CON-LEG101-LR-11130 | 13d |
|  | 4 | **Sanitary Sewerage** |  | 2026-04-21 | 2026-06-15 |  |  |
|  | 2 | **Pipe Work** |  | 2026-04-21 | 2026-06-14 |  |  |
| CON-LEG101-LR-2810 |  | Excavation for Sanitary Sewerage Network [Local – 02 ] | 10d | 2026-04-21 | 2026-05-02 | CON-LEG101-LR-3610, CON-LEG101-EN-1750, CON-LEG101-EN-1760, CON-LEG101-EN-1770, CON-LEG101-EN-3440 | 6d |
| CON-LEG101-LR-2900 |  | Granular bedding for Sanitary Sewerage Network [Local – 02 ] | 4d | 2026-05-03 | 2026-05-06 | CON-LEG101-LR-2810 | 6d |
| CON-LEG101-LR-2990 |  | Installation of Pipe for Sanitary Sewerage Network [Local – 02 ] | 10d | 2026-05-07 | 2026-05-18 | CON-LEG101-PR-2560, CON-LEG101-LR-2900, CON-LEG101-PR-1720 | 6d |
| CON-LEG101-LR-3080 |  | Testing for Sanitary Sewerage Network [Local – 02 ] | 4d | 2026-05-19 | 2026-05-23 | CON-LEG101-LR-2990 | 7d |
| CON-LEG101-LR-3170 |  | Concrete encasement, pipe dia 200 and 350 mm [Local – 02 ] | 3d | 2026-05-24 | 2026-05-26 | CON-LEG101-LR-3080, CON-LEG101-EN-3450, CON-LEG101-PR-1430 | 7d |
| CON-LEG101-LR-3260 |  | Granular Surround for Sanitary Sewerage Network [Local – 02 ] | 4d | 2026-06-01 | 2026-06-04 | CON-LEG101-LR-3170, CON-LEG101-EN-3450 | 7d |
| CON-LEG101-LR-3350 |  | Installation of Micron Marker Magnetic Tape [Local – 02 ] | 2d | 2026-06-06 | 2026-06-07 | CON-LEG101-LR-3260 | 7d |
| CON-LEG101-LR-3440 |  | Backfilling to Subgrade Elevation [Local – 02 ] | 6d | 2026-06-08 | 2026-06-14 | CON-LEG101-LR-3350, CON-LEG101-EN-3440 | 7d |
|  | 1 | **Manhole** |  | 2026-05-19 | 2026-06-15 |  |  |
| CON-LEG101-LR-3530 |  | Installation of Fiberglass Manholes [Local – 02 ] | 20d | 2026-05-19 | 2026-06-15 | CON-LEG101-PR-2570, CON-LEG101-LR-2990, CON-LEG101-PR-1750 | 6d |
|  | 3 | **Local – 03** |  | 2026-04-30 | 2026-09-15 |  |  |
|  | 1 | **Stormwater Utilities** |  | 2026-04-30 | 2026-09-15 |  |  |
|  | 2 | **Pipe Work** |  | 2026-04-30 | 2026-06-14 |  |  |
| CON-LEG101-LR-3620 |  | Excavation for Stormwater Utilities Network [Local – 03 ] | 10d | 2026-04-30 | 2026-05-11 | CON-LEG101-LR-3610, CON-LEG101-SD-1000, CON-LEG101-LR-1740, CON-LEG101-EN-1780, CON-LEG101-EN-1790, CON-LEG101-EN-1800, CON-LEG101-EN-3440 | 11d |
| CON-LEG101-LR-3720 |  | Granular bedding for Stormwater Utilities Network [Local – 03 ] | 3d | 2026-05-12 | 2026-05-14 | CON-LEG101-LR-3620 | 15d |
| CON-LEG101-LR-3820 |  | Installation of Pipe for Stormwater Utilities Network [Local – 03 ] | 8d | 2026-05-16 | 2026-05-24 | CON-LEG101-PR-2100, CON-LEG101-PR-2110, CON-LEG101-LR-3720, CON-LEG101-PR-1780, CON-LEG101-PR-1810 | 15d |
| CON-LEG101-LR-3920 |  | Testing for Stormwater Utilities Network [Local – 03 ] | 3d | 2026-05-25 | 2026-06-01 | CON-LEG101-LR-3820 | 15d |
| CON-LEG101-LR-4020 |  | Granular Surround for Stormwater Utilities Network [Local – 03 ] | 3d | 2026-06-02 | 2026-06-04 | CON-LEG101-LR-3920, CON-LEG101-EN-3450 | 15d |
| CON-LEG101-LR-4130 |  | Installation of Micron Marker Magnetic Tape [Local – 03 ] | 2d | 2026-06-06 | 2026-06-07 | CON-LEG101-LR-4020 | 15d |
| CON-LEG101-LR-4240 |  | Backfilling to Subgrade Elevation [Local – 03 ] | 6d | 2026-06-08 | 2026-06-14 | CON-LEG101-LR-4130, CON-LEG101-EN-3440 | 15d |
|  | 1 | **Manhole** |  | 2026-05-12 | 2026-09-15 |  |  |
| CON-LEG101-LR-11240 |  | Excavation of Inlet Manholes [Local – 03 ] | 6d | 2026-05-12 | 2026-05-18 | CON-LEG101-LR-3620 | 11d |
| CON-LEG101-LR-11250 |  | PC of Inlet Manholes [Local – 03 ] | 3d | 2026-05-19 | 2026-05-21 | CON-LEG101-LR-11240 | 11d |
| CON-LEG101-LR-11260 |  | Installation of Inlet Manholes [Local – 03 ] | 14d | 2026-05-23 | 2026-06-11 | CON-LEG101-LR-11250 | 11d |
| CON-LEG101-LR-11270 |  | Backfilling of Inlet Manholes [Local – 03 ] | 6d | 2026-06-13 | 2026-06-18 | CON-LEG101-LR-11260 | 11d |
| CON-LEG101-LR-11280 |  | Finishing and Testing of Inlet Manholes [Local – 03 ] | 20d | 2026-08-24 | 2026-09-15 | CON-LEG101-LR-11270, CON-LEG101-LR-11260, CON-LEG101-LR-11180, CON-LEG101-LR-11220 | 13d |
|  | 3 | **Concrete Chambers/Outfalls** |  | 2026-06-13 | 2026-09-14 |  |  |
| CON-LEG101-LR-11290 |  | Excavation of Concrete chambers [Local – 03 ] | 12d | 2026-06-13 | 2026-06-25 | CON-LEG101-LR-11260 | 13d |
| CON-LEG101-LR-11300 |  | PC of Concrete chambers [Local – 03 ] | 5d | 2026-06-27 | 2026-07-01 | CON-LEG101-LR-11290 | 13d |
| CON-LEG101-LR-11310 |  | Installation of Concrete chambers [Local – 03 ] | 20d | 2026-07-02 | 2026-07-25 | CON-LEG101-LR-11300 | 13d |
| CON-LEG101-LR-11320 |  | Installation UPVC Pipes to Concrete chambers [Local – 03 ] | 10d | 2026-07-26 | 2026-08-05 | CON-LEG101-LR-11290, CON-LEG101-LR-11310 | 13d |
| CON-LEG101-LR-11330 |  | Backfilling to Concrete chambers [Local – 03 ] | 6d | 2026-08-06 | 2026-08-12 | CON-LEG101-LR-11320, CON-LEG101-LR-11310 | 13d |
| CON-LEG101-LR-11340 |  | FInishing and Testing of Concrete chambers [Local – 03 ] | 11d | 2026-09-02 | 2026-09-14 | CON-LEG101-LR-11320, CON-LEG101-LR-11330, CON-LEG101-LR-11230 | 13d |
|  | 4 | **Local – 04** |  | 2026-06-27 | 2026-10-04 |  |  |
|  | 1 | **Stormwater Utilities** |  | 2026-06-27 | 2026-10-04 |  |  |
|  | 2 | **Pipe Work** |  | 2026-06-27 | 2026-08-19 |  |  |
| CON-LEG101-LR-3630 |  | Excavation for Stormwater Utilities Network [Local – 04 ] | 7d | 2026-06-27 | 2026-07-04 | CON-LEG101-LR-1340, CON-LEG101-SD-1000, CON-LEG101-LR-1800, CON-LEG101-EN-1780, CON-LEG101-EN-1790, CON-LEG101-EN-1800, CON-LEG101-EN-3440 | 12d |
| CON-LEG101-LR-3730 |  | Granular bedding for Stormwater Utilities Network [Local – 04 ] | 4d | 2026-07-05 | 2026-07-08 | CON-LEG101-LR-3630 | 13d |
| CON-LEG101-LR-3830 |  | Installation of Pipe for Stormwater Utilities Network [Local – 04 ] | 8d | 2026-07-09 | 2026-07-18 | CON-LEG101-PR-2100, CON-LEG101-PR-2110, CON-LEG101-LR-3730, CON-LEG101-PR-1780, CON-LEG101-PR-1810 | 13d |
| CON-LEG101-LR-3930 |  | Testing for Stormwater Utilities Network [Local – 04 ] | 12d | 2026-07-19 | 2026-08-01 | CON-LEG101-LR-3830 | 15d |
| CON-LEG101-LR-4030 |  | Granular Surround for Stormwater Utilities Network [Local – 04 ] | 8d | 2026-08-02 | 2026-08-10 | CON-LEG101-LR-3930, CON-LEG101-EN-3450 | 15d |
| CON-LEG101-LR-4140 |  | Installation of Micron Marker Magnetic Tape [Local – 04 ] | 2d | 2026-08-13 | 2026-08-15 | CON-LEG101-LR-4030, CON-LEG101-LR-11330 | 13d |
| CON-LEG101-LR-4250 |  | Backfilling to Subgrade Elevation [Local – 04 ] | 4d | 2026-08-16 | 2026-08-19 | CON-LEG101-LR-4140, CON-LEG101-EN-3440 | 13d |
|  | 1 | **Manhole** |  | 2026-07-05 | 2026-10-04 |  |  |
| CON-LEG101-LR-11350 |  | Excavation of Inlet Manholes [Local – 04 ] | 10d | 2026-07-05 | 2026-07-15 | CON-LEG101-LR-3630 | 12d |
| CON-LEG101-LR-11360 |  | PC of Inlet Manholes [Local – 04 ] | 3d | 2026-07-16 | 2026-07-19 | CON-LEG101-LR-11350 | 12d |
| CON-LEG101-LR-4370 |  | Installation of Inlet Manholes [Local – 04 ] | 10d | 2026-07-20 | 2026-07-30 | CON-LEG101-LR-11360, CON-LEG101-LR-3830, CON-LEG101-PR-1980 | 12d |
| CON-LEG101-LR-11380 |  | Backfilling of Inlet Manholes [Local – 04 ] | 6d | 2026-08-01 | 2026-08-06 | CON-LEG101-LR-4370 | 14d |

| ID | WBS | Task | Duration | Start | Finish | Predecessors | Total float |
| --- | --- | --- | --- | --- | --- | --- | --- |
| CON-LEG101-LR-11390 |  | Finishing and Testing of Inlet Manholes [Local – 04 ] | 15d | 2026-09-16 | 2026-10-04 | CON-LEG101-LR-11380, CON-LEG101-LR-4370, CON-LEG101-LR-11280 | 13d |
|  | 3 | **Concrete Chambers/Outfalls** |  | 2026-08-01 | 2026-09-29 |  |  |
| CON-LEG101-LR-11400 |  | Excavation of Concrete chambers [Local – 04 ] | 6d | 2026-08-01 | 2026-08-06 | CON-LEG101-LR-4370 | 12d |
| CON-LEG101-LR-11410 |  | PC of Concrete chambers [Local – 04 ] | 2d | 2026-08-08 | 2026-08-09 | CON-LEG101-LR-11400 | 12d |
| CON-LEG101-LR-4470 |  | Installation of Concrete chambers [Local – 04 ] | 10d | 2026-08-10 | 2026-08-20 | CON-LEG101-LR-11410, CON-LEG101-LR-4370, CON-LEG101-LR-3830, CON-LEG101-PR-1990, CON-LEG101-LR-11380 | 12d |
| CON-LEG101-LR-11420 |  | Installation UPVC Pipes to Concrete chambers [Local – 04 ] | 6d | 2026-08-22 | 2026-08-27 | CON-LEG101-LR-11400, CON-LEG101-LR-4470 | 12d |
| CON-LEG101-LR-11430 |  | Backfilling to Concrete chambers [Local – 04 ] | 6d | 2026-08-29 | 2026-09-03 | CON-LEG101-LR-11420, CON-LEG101-LR-4470 | 12d |
| CON-LEG101-LR-11440 |  | FInishing and Testing of Concrete chambers [Local – 04 ] | 12d | 2026-09-15 | 2026-09-29 | CON-LEG101-LR-11420, CON-LEG101-LR-11430, CON-LEG101-LR-11340 | 13d |
|  | 4 | **Sanitary Sewerage** |  | 2026-07-05 | 2026-08-19 |  |  |
|  | 2 | **Pipe Work** |  | 2026-07-05 | 2026-08-19 |  |  |
| CON-LEG101-LR-2820 |  | Excavation for Sanitary Sewerage Network [Local – 04 ] | 10d | 2026-07-05 | 2026-07-15 | CON-LEG101-LR-3630, CON-LEG101-EN-1750, CON-LEG101-EN-1760, CON-LEG101-EN-1770, CON-LEG101-EN-3440 | 13d |
| CON-LEG101-LR-2910 |  | Granular bedding for Sanitary Sewerage Network [Local – 04 ] | 2d | 2026-07-16 | 2026-07-18 | CON-LEG101-LR-2820 | 13d |
| CON-LEG101-LR-3000 |  | Installation of Pipe for Sanitary Sewerage Network [Local – 04 ] | 12d | 2026-07-19 | 2026-08-01 | CON-LEG101-PR-2560, CON-LEG101-LR-2910, CON-LEG101-PR-1720 | 13d |
| CON-LEG101-LR-3090 |  | Testing for Sanitary Sewerage Network [Local – 04 ] | 3d | 2026-08-02 | 2026-08-04 | CON-LEG101-LR-3000 | 13d |
| CON-LEG101-LR-3180 |  | Concrete encasement, pipe dia 200 and 350 mm [Local – 04 ] | 3d | 2026-08-05 | 2026-08-08 | CON-LEG101-LR-3090, CON-LEG101-EN-3450, CON-LEG101-PR-1430 | 13d |
| CON-LEG101-LR-3270 |  | Granular Surround for Sanitary Sewerage Network [Local – 04 ] | 2d | 2026-08-09 | 2026-08-10 | CON-LEG101-LR-3180, CON-LEG101-EN-3450 | 13d |
| CON-LEG101-LR-3360 |  | Installation of Micron Marker Magnetic Tape [Local – 04 ] | 2d | 2026-08-11 | 2026-08-12 | CON-LEG101-LR-3270 | 13d |
| CON-LEG101-LR-3450 |  | Backfilling to Subgrade Elevation [Local – 04 ] | 6d | 2026-08-13 | 2026-08-19 | CON-LEG101-LR-3360, CON-LEG101-EN-3440 | 13d |
|  | 1 | **Manhole** |  | 2026-08-02 | 2026-08-12 |  |  |
| CON-LEG101-LR-3540 |  | Installation of Fiberglass Manholes [Local – 04 ] | 10d | 2026-08-02 | 2026-08-12 | CON-LEG101-PR-2570, CON-LEG101-LR-3000, CON-LEG101-PR-1750 | 19d |
|  | 5 | **Local – 05** |  | 2026-07-05 | 2026-10-17 |  |  |
|  | 1 | **Stormwater Utilities** |  | 2026-07-05 | 2026-10-17 |  |  |
|  | 2 | **Pipe Work** |  | 2026-07-05 | 2026-08-24 |  |  |
| CON-LEG101-LR-3640 |  | Excavation for Stormwater Utilities Network [Local – 05 ] | 10d | 2026-07-05 | 2026-07-15 | CON-LEG101-LR-3630, CON-LEG101-SD-1000, CON-LEG101-LR-1900, CON-LEG101-EN-1780, CON-LEG101-EN-1790, CON-LEG101-EN-1800, CON-LEG101-EN-3440 | 12d |
| CON-LEG101-LR-3740 |  | Granular bedding for Stormwater Utilities Network [Local – 05 ] | 4d | 2026-07-16 | 2026-07-20 | CON-LEG101-LR-3640 | 13d |
| CON-LEG101-LR-3840 |  | Installation of Pipe for Stormwater Utilities Network [Local – 05 ] | 8d | 2026-07-21 | 2026-07-29 | CON-LEG101-PR-2100, CON-LEG101-PR-2110, CON-LEG101-LR-3740, CON-LEG101-PR-1780, CON-LEG101-PR-1810 | 13d |
| CON-LEG101-LR-3940 |  | Testing for Stormwater Utilities Network [Local – 05 ] | 6d | 2026-07-30 | 2026-08-05 | CON-LEG101-LR-3840 | 16d |
| CON-LEG101-LR-4040 |  | Granular Surround for Stormwater Utilities Network [Local – 05 ] | 6d | 2026-08-06 | 2026-08-12 | CON-LEG101-LR-3940, CON-LEG101-EN-3450 | 16d |
| CON-LEG101-LR-4150 |  | Installation of Micron Marker Magnetic Tape [Local – 05 ] | 2d | 2026-08-13 | 2026-08-15 | CON-LEG101-LR-4040 | 16d |
| CON-LEG101-LR-4260 |  | Backfilling to Subgrade Elevation [Local – 05 ] | 8d | 2026-08-16 | 2026-08-24 | CON-LEG101-LR-4150, CON-LEG101-EN-3440 | 16d |
|  | 1 | **Manhole** |  | 2026-07-16 | 2026-10-17 |  |  |
| CON-LEG101-LR-11450 |  | Excavation of Inlet Manholes [Local – 05 ] | 10d | 2026-07-16 | 2026-07-27 | CON-LEG101-LR-3640 | 12d |
| CON-LEG101-LR-11460 |  | PC of Inlet Manholes [Local – 05 ] | 3d | 2026-07-28 | 2026-07-30 | CON-LEG101-LR-11450 | 12d |
| CON-LEG101-LR-4380 |  | Installation of Inlet Manholes [Local – 05 ] | 10d | 2026-08-01 | 2026-08-11 | CON-LEG101-LR-11460, CON-LEG101-LR-3840, CON-LEG101-PR-1980 | 12d |
| CON-LEG101-LR-11470 |  | Backfilling of Inlet Manholes [Local – 05 ] | 8d | 2026-08-12 | 2026-08-20 | CON-LEG101-LR-4380 | 19d |
| CON-LEG101-LR-11480 |  | Finishing and Testing of Inlet Manholes [Local – 05 ] | 11d | 2026-10-05 | 2026-10-17 | CON-LEG101-LR-11470, CON-LEG101-LR-4380, CON-LEG101-LR-11390 | 13d |
|  | 3 | **Concrete Chambers/Outfalls** |  | 2026-08-12 | 2026-10-15 |  |  |
| CON-LEG101-LR-11490 |  | Excavation of Concrete chambers [Local – 05 ] | 6d | 2026-08-12 | 2026-08-18 | CON-LEG101-LR-4380 | 12d |
| CON-LEG101-LR-11500 |  | PC of Concrete chambers [Local – 05 ] | 2d | 2026-08-19 | 2026-08-20 | CON-LEG101-LR-11490 | 12d |
| CON-LEG101-LR-4480 |  | Installation of Concrete chambers [Local – 05 ] | 10d | 2026-08-22 | 2026-09-01 | CON-LEG101-LR-11500, CON-LEG101-LR-4380, CON-LEG101-LR-3840, CON-LEG101-PR-1990 | 12d |
| CON-LEG101-LR-11510 |  | Installation UPVC Pipes to Concrete chambers [Local – 05 ] | 4d | 2026-09-02 | 2026-09-06 | CON-LEG101-LR-11490, CON-LEG101-LR-4480 | 12d |
| CON-LEG101-LR-11520 |  | Backfilling to Concrete chambers [Local – 05 ] | 4d | 2026-09-07 | 2026-09-10 | CON-LEG101-LR-11510, CON-LEG101-LR-4480 | 12d |
| CON-LEG101-LR-11530 |  | FInishing and Testing of Concrete chambers [Local – 05 ] | 14d | 2026-09-30 | 2026-10-15 | CON-LEG101-LR-11510, CON-LEG101-LR-11520, CON-LEG101-LR-11440 | 13d |
|  | 4 | **Sanitary Sewerage** |  | 2026-07-16 | 2026-08-29 |  |  |
|  | 2 | **Pipe Work** |  | 2026-07-16 | 2026-08-26 |  |  |
| CON-LEG101-LR-2830 |  | Excavation for Sanitary Sewerage Network [Local – 05 ] | 8d | 2026-07-16 | 2026-07-25 | CON-LEG101-LR-3640, CON-LEG101-EN-1750, CON-LEG101-EN-1760, CON-LEG101-EN-1770, CON-LEG101-EN-3440 | 12d |
| CON-LEG101-LR-2920 |  | Granular bedding for Sanitary Sewerage Network [Local – 05 ] | 4d | 2026-07-26 | 2026-07-29 | CON-LEG101-LR-2830 | 12d |
| CON-LEG101-LR-3010 |  | Installation of Pipe for Sanitary Sewerage Network [Local – 05 ] | 8d | 2026-07-30 | 2026-08-08 | CON-LEG101-PR-2560, CON-LEG101-LR-2920, CON-LEG101-PR-1720 | 12d |
| CON-LEG101-LR-3100 |  | Testing for Sanitary Sewerage Network [Local – 05 ] | 4d | 2026-08-09 | 2026-08-12 | CON-LEG101-LR-3010 | 14d |
| CON-LEG101-LR-3200 |  | Concrete encasement, pipe dia 200 and 350 mm [Local – 05 ] | 4d | 2026-08-13 | 2026-08-17 | CON-LEG101-LR-3100, CON-LEG101-EN-3450, CON-LEG101-PR-1430 | 14d |
| CON-LEG101-LR-3280 |  | Granular Surround for Sanitary Sewerage Network [Local – 05 ] | 2d | 2026-08-18 | 2026-08-19 | CON-LEG101-LR-3200, CON-LEG101-EN-3450 | 14d |
| CON-LEG101-LR-3370 |  | Installation of Micron Marker Magnetic Tape [Local – 05 ] | 2d | 2026-08-20 | 2026-08-22 | CON-LEG101-LR-3280 | 14d |
| CON-LEG101-LR-3460 |  | Backfilling to Subgrade Elevation [Local – 05 ] | 4d | 2026-08-23 | 2026-08-26 | CON-LEG101-LR-3370, CON-LEG101-EN-3440 | 14d |
|  | 1 | **Manhole** |  | 2026-08-09 | 2026-08-29 |  |  |
| CON-LEG101-LR-3550 |  | Installation of Fiberglass Manholes [Local – 05 ] | 18d | 2026-08-09 | 2026-08-29 | CON-LEG101-PR-2570, CON-LEG101-LR-3010, CON-LEG101-PR-1750 | 12d |
|  | 6 | **Local – 06** |  | 2026-07-05 | 2026-10-29 |  |  |
|  | 1 | **Stormwater Utilities** |  | 2026-07-05 | 2026-10-29 |  |  |
|  | 2 | **Pipe Work** |  | 2026-07-05 | 2026-08-30 |  |  |
| CON-LEG101-LR-3650 |  | Excavation for Stormwater Utilities Network [Local – 06 ] | 10d | 2026-07-05 | 2026-07-15 | CON-LEG101-LR-3640 SS, CON-LEG101-SD-1000, CON-LEG101-LR-1990, CON-LEG101-EN-1780, CON-LEG101-EN-1790, CON-LEG101-EN-1800, CON-LEG101-EN-3440 | 12d |
| CON-LEG101-LR-3750 |  | Granular bedding for Stormwater Utilities Network [Local – 06 ] | 4d | 2026-07-16 | 2026-07-20 | CON-LEG101-LR-3650 | 12d |
| CON-LEG101-LR-3850 |  | Installation of Pipe for Stormwater Utilities Network [Local – 06 ] | 10d | 2026-07-21 | 2026-08-01 | CON-LEG101-PR-2110, CON-LEG101-LR-3750, CON-LEG101-PR-1780 | 12d |
| CON-LEG101-LR-3950 |  | Testing for Stormwater Utilities Network [Local – 06 ] | 8d | 2026-08-02 | 2026-08-10 | CON-LEG101-LR-3850 | 12d |
| CON-LEG101-LR-4050 |  | Granular Surround for Stormwater Utilities Network [Local – 06 ] | 8d | 2026-08-11 | 2026-08-19 | CON-LEG101-LR-3950, CON-LEG101-EN-3450 | 12d |
| CON-LEG101-LR-4160 |  | Installation of Micron Marker Magnetic Tape [Local – 06 ] | 2d | 2026-08-20 | 2026-08-22 | CON-LEG101-LR-4050 | 12d |
| CON-LEG101-LR-4280 |  | Backfilling to Subgrade Elevation [Local – 06 ] | 7d | 2026-08-23 | 2026-08-30 | CON-LEG101-LR-4160, CON-LEG101-EN-3440 | 12d |
|  | 1 | **Manhole** |  | 2026-07-16 | 2026-10-28 |  |  |
| CON-LEG101-LR-11540 |  | Excavation of Inlet Manholes [Local – 06 ] | 10d | 2026-07-16 | 2026-07-27 | CON-LEG101-LR-3650 | 12d |
| CON-LEG101-LR-11550 |  | PC of Inlet Manholes [Local – 06 ] | 5d | 2026-07-28 | 2026-08-02 | CON-LEG101-LR-11540 | 12d |
| CON-LEG101-LR-4390 |  | Installation of Inlet Manholes [Local – 06 ] | 10d | 2026-08-03 | 2026-08-13 | CON-LEG101-LR-11550, CON-LEG101-LR-3850, CON-LEG101-PR-1980 | 12d |
| CON-LEG101-LR-11560 |  | Backfilling of Inlet Manholes [Local – 06 ] | 8d | 2026-08-15 | 2026-08-23 | CON-LEG101-LR-4390 | 18d |

| ID | WBS | Task | Duration | Start | Finish | Predecessors | Total float |
| --- | --- | --- | --- | --- | --- | --- | --- |
| CON-LEG101-LR-11570 |  | Finishing and Testing of Inlet Manholes [Local – 06 ] | 10d | 2026-10-18 | 2026-10-28 | CON-LEG101-LR-11560, CON-LEG101-LR-4390, CON-LEG101-LR-11480 | 13d |
|  | 3 | **Concrete Chambers/Outfalls** |  | 2026-08-15 | 2026-10-29 |  |  |
| CON-LEG101-LR-11580 |  | Excavation of Concrete chambers [Local – 06 ] | 6d | 2026-08-15 | 2026-08-20 | CON-LEG101-LR-4390 | 12d |
| CON-LEG101-LR-11590 |  | PC of Concrete chambers [Local – 06 ] | 2d | 2026-08-22 | 2026-08-23 | CON-LEG101-LR-11580 | 12d |
| CON-LEG101-LR-4490 |  | Installation of Concrete chambers [Local – 06 ] | 6d | 2026-08-24 | 2026-08-30 | CON-LEG101-LR-11590, CON-LEG101-LR-3850, CON-LEG101-LR-4390, CON-LEG101-PR-1990 | 12d |
| CON-LEG101-LR-11600 |  | Installation UPVC Pipes to Concrete chambers [Local – 06 ] | 4d | 2026-08-31 | 2026-09-03 | CON-LEG101-LR-11580, CON-LEG101-LR-4490 | 12d |
| CON-LEG101-LR-11610 |  | Backfilling to Concrete chambers [Local – 06 ] | 3d | 2026-09-05 | 2026-09-07 | CON-LEG101-LR-11600, CON-LEG101-LR-4490 | 12d |
| CON-LEG101-LR-11620 |  | FInishing and Testing of Concrete chambers [Local – 06 ] | 12d | 2026-10-17 | 2026-10-29 | CON-LEG101-LR-11600, CON-LEG101-LR-11610, CON-LEG101-LR-4490, CON-LEG101-LR-11530 | 13d |
|  | 4 | **Sanitary Sewerage** |  | 2026-07-16 | 2026-08-30 |  |  |
|  | 2 | **Pipe Work** |  | 2026-07-16 | 2026-08-26 |  |  |
| CON-LEG101-LR-2840 |  | Excavation for Sanitary Sewerage Network [Local – 06 ] | 6d | 2026-07-16 | 2026-07-22 | CON-LEG101-LR-3650, CON-LEG101-EN-1750, CON-LEG101-EN-1760, CON-LEG101-EN-1770, CON-LEG101-EN-3440 | 12d |
| CON-LEG101-LR-2930 |  | Granular bedding for Sanitary Sewerage Network [Local – 06 ] | 4d | 2026-07-23 | 2026-07-27 | CON-LEG101-LR-2840 | 12d |
| CON-LEG101-LR-3020 |  | Installation of Pipe for Sanitary Sewerage Network [Local – 06 ] | 8d | 2026-07-28 | 2026-08-05 | CON-LEG101-PR-2560, CON-LEG101-LR-2930, CON-LEG101-PR-1720 | 12d |
| CON-LEG101-LR-3110 |  | Testing for Sanitary Sewerage Network [Local – 06 ] | 4d | 2026-08-06 | 2026-08-10 | CON-LEG101-LR-3020 | 15d |
| CON-LEG101-LR-3210 |  | Concrete encasement, pipe dia 200 and 350 mm [Local – 06 ] | 4d | 2026-08-11 | 2026-08-15 | CON-LEG101-LR-3110, CON-LEG101-EN-3450, CON-LEG101-PR-1430 | 15d |
| CON-LEG101-LR-3300 |  | Granular Surround for Sanitary Sewerage Network [Local – 06 ] | 4d | 2026-08-16 | 2026-08-19 | CON-LEG101-LR-3210, CON-LEG101-EN-3450 | 15d |
| CON-LEG101-LR-3390 |  | Installation of Micron Marker Magnetic Tape [Local – 06 ] | 2d | 2026-08-20 | 2026-08-22 | CON-LEG101-LR-3300 | 15d |
| CON-LEG101-LR-3480 |  | Backfilling to Subgrade Elevation [Local – 06 ] | 4d | 2026-08-23 | 2026-08-26 | CON-LEG101-LR-3390, CON-LEG101-EN-3440 | 15d |
|  | 1 | **Manhole** |  | 2026-08-06 | 2026-08-30 |  |  |
| CON-LEG101-LR-3560 |  | Installation of Fiberglass Manholes [Local – 06 ] | 21d | 2026-08-06 | 2026-08-30 | CON-LEG101-PR-2570, CON-LEG101-LR-3020, CON-LEG101-PR-1750 | 12d |
|  | 7 | **Local – 07** |  | 2026-07-14 | 2026-11-07 |  |  |
|  | 1 | **Stormwater Utilities** |  | 2026-07-14 | 2026-11-07 |  |  |
|  | 2 | **Pipe Work** |  | 2026-07-14 | 2026-08-01 |  |  |
| CON-LEG101-LR-3660 |  | Excavation for Stormwater Utilities Network [Local – 07 ] | 3d | 2026-07-14 | 2026-07-16 | CON-LEG101-SD-1000, CON-LEG101-LR-4230, CON-LEG101-LR-2080, CON-LEG101-EN-1780, CON-LEG101-EN-1790, CON-LEG101-EN-1800, CON-LEG101-EN-3440 | 12d |
| CON-LEG101-LR-3760 |  | Granular bedding for Stormwater Utilities Network [Local – 07 ] | 2d | 2026-07-18 | 2026-07-19 | CON-LEG101-LR-3660 | 12d |
| CON-LEG101-LR-3860 |  | Installation of Pipe for Stormwater Utilities Network [Local – 07 ] | 2d | 2026-07-20 | 2026-07-21 | CON-LEG101-PR-2110, CON-LEG101-LR-3760, CON-LEG101-PR-1780 | 12d |
| CON-LEG101-LR-3960 |  | Testing for Stormwater Utilities Network [Local – 07 ] | 2d | 2026-07-22 | 2026-07-23 | CON-LEG101-LR-3860 | 12d |
| CON-LEG101-LR-4060 |  | Granular Surround for Stormwater Utilities Network [Local – 07 ] | 2d | 2026-07-25 | 2026-07-26 | CON-LEG101-LR-3960, CON-LEG101-EN-3450 | 12d |
| CON-LEG101-LR-4180 |  | Installation of Micron Marker Magnetic Tape [Local – 07 ] | 3d | 2026-07-27 | 2026-07-29 | CON-LEG101-LR-4060 | 12d |
| CON-LEG101-LR-4290 |  | Backfilling to Subgrade Elevation [Local – 07 ] | 2d | 2026-07-30 | 2026-08-01 | CON-LEG101-LR-4180, CON-LEG101-EN-3440 | 12d |
|  | 1 | **Manhole** |  | 2026-08-02 | 2026-11-07 |  |  |
| CON-LEG101-LR-11630 |  | Excavation of Inlet Manholes [Local – 07 ] | 3d | 2026-08-02 | 2026-08-04 | CON-LEG101-LR-3660, CON-LEG101-LR-4290 | 12d |
| CON-LEG101-LR-11640 |  | PC of Inlet Manholes [Local – 07 ] | 2d | 2026-08-05 | 2026-08-06 | CON-LEG101-LR-11630 | 12d |
| CON-LEG101-LR-4400 |  | Installation of Inlet Manholes [Local – 07 ] | 8d | 2026-08-08 | 2026-08-16 | CON-LEG101-LR-11640, CON-LEG101-LR-3860, CON-LEG101-PR-1980 | 12d |
| CON-LEG101-LR-11650 |  | Backfilling of Inlet Manholes [Local – 07 ] | 8d | 2026-08-17 | 2026-08-25 | CON-LEG101-LR-4400 | 17d |
| CON-LEG101-LR-11660 |  | Finishing and Testing of Inlet Manholes [Local – 07 ] | 8d | 2026-10-29 | 2026-11-07 | CON-LEG101-LR-11650, CON-LEG101-LR-4400, CON-LEG101-LR-11570 | 13d |
|  | 3 | **Concrete Chambers/Outfalls** |  | 2026-08-17 | 2026-11-05 |  |  |
| CON-LEG101-LR-11670 |  | Excavation of Concrete chambers [Local – 07 ] | 3d | 2026-08-17 | 2026-08-19 | CON-LEG101-LR-4400 | 12d |
| CON-LEG101-LR-11680 |  | PC of Concrete chambers [Local – 07 ] | 2d | 2026-08-20 | 2026-08-22 | CON-LEG101-LR-11670 | 12d |
| CON-LEG101-LR-4500 |  | Installation of Concrete chambers [Local – 07 ] | 6d | 2026-08-23 | 2026-08-29 | CON-LEG101-LR-11680, CON-LEG101-LR-3860, CON-LEG101-PR-1990 | 12d |
| CON-LEG101-LR-11690 |  | Installation UPVC Pipes to Concrete chambers [Local – 07 ] | 4d | 2026-08-30 | 2026-09-02 | CON-LEG101-LR-11670, CON-LEG101-LR-4500 | 12d |
| CON-LEG101-LR-11700 |  | Backfilling to Concrete chambers [Local – 07 ] | 3d | 2026-09-03 | 2026-09-06 | CON-LEG101-LR-11690, CON-LEG101-LR-4500 | 12d |
| CON-LEG101-LR-11710 |  | FInishing and Testing of Concrete chambers [Local – 07 ] | 6d | 2026-10-31 | 2026-11-05 | CON-LEG101-LR-11690, CON-LEG101-LR-11700, CON-LEG101-LR-4500, CON-LEG101-LR-11620 | 13d |
|  | 4 | **Sanitary Sewerage** |  | 2026-08-08 | 2026-08-31 |  |  |
|  | 2 | **Pipe Work** |  | 2026-08-08 | 2026-08-27 |  |  |
| CON-LEG101-LR-2850 |  | Excavation for Sanitary Sewerage Network [Local – 07 ] | 3d | 2026-08-08 | 2026-08-10 | CON-LEG101-LR-3660, CON-LEG101-EN-1750, CON-LEG101-EN-1760, CON-LEG101-EN-1770, CON-LEG101-EN-3440, CON-LEG101-LR-11640 | 12d |
| CON-LEG101-LR-2940 |  | Granular bedding for Sanitary Sewerage Network [Local – 07 ] | 2d | 2026-08-11 | 2026-08-12 | CON-LEG101-LR-2850 | 12d |
| CON-LEG101-LR-3030 |  | Installation of Pipe for Sanitary Sewerage Network [Local – 07 ] | 4d | 2026-08-13 | 2026-08-17 | CON-LEG101-PR-2560, CON-LEG101-LR-2940, CON-LEG101-PR-1720 | 12d |
| CON-LEG101-LR-3120 |  | Testing for Sanitary Sewerage Network [Local – 07 ] | 2d | 2026-08-18 | 2026-08-19 | CON-LEG101-LR-3030 | 15d |
| CON-LEG101-LR-3220 |  | Concrete encasement, pipe dia 200 and 350 mm [Local – 07 ] | 2d | 2026-08-20 | 2026-08-22 | CON-LEG101-LR-3120, CON-LEG101-EN-3450, CON-LEG101-PR-1430 | 15d |
| CON-LEG101-LR-3310 |  | Granular Surround for Sanitary Sewerage Network [Local – 07 ] | 2d | 2026-08-23 | 2026-08-24 | CON-LEG101-LR-3220, CON-LEG101-EN-3450 | 15d |
| CON-LEG101-LR-3400 |  | Installation of Micron Marker Magnetic Tape [Local – 07 ] | 1d | 2026-08-25 | 2026-08-25 | CON-LEG101-LR-3310 | 15d |
| CON-LEG101-LR-3490 |  | Backfilling to Subgrade Elevation [Local – 07 ] | 2d | 2026-08-26 | 2026-08-27 | CON-LEG101-LR-3400, CON-LEG101-EN-3440 | 15d |
|  | 1 | **Manhole** |  | 2026-08-18 | 2026-08-31 |  |  |
| CON-LEG101-LR-3570 |  | Installation of Fiberglass Manholes [Local – 07 ] | 12d | 2026-08-18 | 2026-08-31 | CON-LEG101-PR-2570, CON-LEG101-LR-3030, CON-LEG101-PR-1750 | 12d |
|  | 8 | **Local – 08** |  | 2026-06-15 | 2026-11-18 |  |  |
|  | 1 | **Stormwater Utilities** |  | 2026-06-15 | 2026-11-18 |  |  |
|  | 2 | **Pipe Work** |  | 2026-06-15 | 2026-08-10 |  |  |
| CON-LEG101-LR-3670 |  | Excavation for Stormwater Utilities Network [Local – 08 ] | 10d | 2026-06-15 | 2026-06-25 | CON-LEG101-LR-3610, CON-LEG101-SD-1000, CON-LEG101-LR-2180, CON-LEG101-EN-1780, CON-LEG101-EN-1790, CON-LEG101-EN-1800, CON-LEG101-EN-3440 | 12d |
| CON-LEG101-LR-3770 |  | Granular bedding for Stormwater Utilities Network [Local – 08 ] | 4d | 2026-06-27 | 2026-06-30 | CON-LEG101-PR-2110, CON-LEG101-LR-3670 | 12d |
| CON-LEG101-LR-3870 |  | Installation of Pipe for Stormwater Utilities Network [Local – 08 ] | 10d | 2026-07-01 | 2026-07-12 | CON-LEG101-PR-2110, CON-LEG101-LR-3770, CON-LEG101-PR-1780 | 12d |
| CON-LEG101-LR-3970 |  | Testing for Stormwater Utilities Network [Local – 08 ] | 8d | 2026-07-13 | 2026-07-21 | CON-LEG101-LR-3870 | 19d |
| CON-LEG101-LR-4080 |  | Granular Surround for Stormwater Utilities Network [Local – 08 ] | 6d | 2026-07-22 | 2026-07-28 | CON-LEG101-LR-3970, CON-LEG101-EN-3450 | 19d |
| CON-LEG101-LR-4190 |  | Installation of Micron Marker Magnetic Tape [Local – 08 ] | 4d | 2026-07-29 | 2026-08-02 | CON-LEG101-LR-4080 | 19d |
| CON-LEG101-LR-4300 |  | Backfilling to Subgrade Elevation [Local – 08 ] | 7d | 2026-08-03 | 2026-08-10 | CON-LEG101-LR-4190, CON-LEG101-EN-3440 | 19d |
|  | 1 | **Manhole** |  | 2026-06-27 | 2026-11-18 |  |  |
| CON-LEG101-LR-11720 |  | Excavation of Inlet Manholes [Local – 08 ] | 10d | 2026-06-27 | 2026-07-07 | CON-LEG101-LR-3670 | 13d |
| CON-LEG101-LR-11730 |  | PC of Inlet Manholes [Local – 08 ] | 3d | 2026-07-08 | 2026-07-11 | CON-LEG101-LR-11720 | 13d |
| CON-LEG101-LR-4410 |  | Installation of Inlet Manholes [Local – 08 ] | 14d | 2026-07-13 | 2026-07-28 | CON-LEG101-LR-11730, CON-LEG101-LR-3870, CON-LEG101-PR-1980 | 12d |
| CON-LEG101-LR-11740 |  | Backfilling of Inlet Manholes [Local – 08 ] | 10d | 2026-07-29 | 2026-08-09 | CON-LEG101-LR-4410 | 20d |

| ID | WBS | Task | Duration | Start | Finish | Predecessors | Total float |
| --- | --- | --- | --- | --- | --- | --- | --- |
| CON-LEG101-LR-11750 |  | Finishing and Testing of Inlet Manholes [Local – 08 ] | 10d | 2026-11-08 | 2026-11-18 | CON-LEG101-LR-11740, CON-LEG101-LR-4410, CON-LEG101-LR-11660 | 13d |
|  | 3 | **Concrete Chambers/Outfalls** |  | 2026-07-29 | 2026-11-18 |  |  |
| CON-LEG101-LR-11760 |  | Excavation of Concrete chambers [Local – 08 ] | 6d | 2026-07-29 | 2026-08-04 | CON-LEG101-LR-4410 | 12d |
| CON-LEG101-LR-11770 |  | PC of Concrete chambers [Local – 08 ] | 2d | 2026-08-05 | 2026-08-06 | CON-LEG101-LR-11760 | 12d |
| CON-LEG101-LR-4510 |  | Installation of Concrete chambers [Local – 08 ] | 12d | 2026-08-08 | 2026-08-20 | CON-LEG101-LR-11770, CON-LEG101-LR-3870, CON-LEG101-PR-1990 | 12d |
| CON-LEG101-LR-11780 |  | Installation UPVC Pipes to Concrete chambers [Local – 08 ] | 10d | 2026-08-22 | 2026-09-01 | CON-LEG101-LR-11760, CON-LEG101-LR-4510 | 12d |
| CON-LEG101-LR-11790 |  | Backfilling to Concrete chambers [Local – 08 ] | 6d | 2026-09-02 | 2026-09-08 | CON-LEG101-LR-11780, CON-LEG101-LR-4510 | 12d |
| CON-LEG101-LR-11800 |  | FInishing and Testing of Concrete chambers [Local – 08 ] | 11d | 2026-11-07 | 2026-11-18 | CON-LEG101-LR-11780, CON-LEG101-LR-11790, CON-LEG101-LR-4510, CON-LEG101-LR-11710 | 13d |
|  | 7 | **Shallow infrastructure network** |  | 2026-06-15 | 2027-03-18 |  |  |
|  | 1 | **Local – 01** |  | 2026-06-15 | 2027-03-18 |  |  |
|  | 1 | **LOCAL - 01 Segment-01 (From 0+000 to 1+066)** |  | 2026-06-16 | 2027-03-18 |  |  |
|  | 5 | **TSE Network** |  | 2026-06-16 | 2026-12-21 |  |  |
|  | 2 | **Pipe Work** |  | 2026-06-16 | 2026-10-08 |  |  |
| CON-LEG101-LR-1300 |  | Excavation for TSE Network [Local – 01 Segment-01] | 15d | 2026-06-16 | 2026-07-02 | CON-LEG101-LR-3410, CON-LEG101-LR-10910, CON-LEG101-LR-4200, CON-LEG101-LR-2780, CON-LEG101-EN-1720, CON-LEG101-EN-1730, CON-LEG101-EN-1740, CON-LEG101-EN-1810 | 9d |
| CON-LEG101-LR-1410 |  | Granular bedding for TSE Network [Local – 01 Segment-01] | 12d | 2026-07-04 | 2026-07-16 | CON-LEG101-LR-1300 | 9d |
| CON-LEG101-LR-1520 |  | Installation of Pipe for TSE Network [Local – 01 Segment-01] | 20d | 2026-07-18 | 2026-08-09 | CON-LEG101-PR-2590, CON-LEG101-LR-1410, CON-LEG101-PR-1690 | 9d |
| CON-LEG101-LR-1640 |  | Testing for TSE Network [Local – 01 Segment-01] | 14d | 2026-08-10 | 2026-08-25 | CON-LEG101-LR-1520 | 9d |
| CON-LEG101-LR-1750 |  | Concrete encasement, pipe dia 110 mm [Local – 01 Segment-01] | 3d | 2026-08-26 | 2026-08-29 | CON-LEG101-LR-1640, CON-LEG101-EN-3450, CON-LEG101-PR-1430 | 9d |
| CON-LEG101-LR-1850 |  | Granular Surround for TSE Network [Local – 01 Segment-01] | 14d | 2026-08-30 | 2026-09-14 | CON-LEG101-LR-1750, CON-LEG101-EN-3450 | 9d |
| CON-LEG101-LR-1960 |  | Installation of Micron Marker Magnetic Tape [Local – 01 Segment-01] | 6d | 2026-09-15 | 2026-09-21 | CON-LEG101-LR-1850 | 9d |
| CON-LEG101-LR-2070 |  | Backfilling to Subgrade Elevation [Local – 01 Segment-01] | 14d | 2026-09-22 | 2026-10-08 | CON-LEG101-LR-1960, CON-LEG101-EN-3440, CON-LEG101-MS-1120 | 9d |
|  | 1 | **Valves/Chamber** |  | 2026-08-10 | 2026-12-21 |  |  |
| CON-LEG101-LR-2610 |  | Installation of Wash out chambers [Local – 01 Segment-01] | 21d | 2026-08-10 | 2026-09-02 | CON-LEG101-LR-1520, CON-LEG101-PR-1970 | 19d |
| CON-LEG101-LR-2680 |  | Installation of Air Valve chambers [Local – 01 Segment-01] | 21d | 2026-09-03 | 2026-09-28 | CON-LEG101-LR-2610, CON-LEG101-PR-1970 | 19d |
| CON-LEG101-LR-2190 |  | Installation of Gate (Sluice) valves (Direct buried) [Local – 01 Segment-01] | 21d | 2026-09-29 | 2026-10-22 | CON-LEG101-LR-2680, CON-LEG101-LR-1520, CON-LEG101-PR-1970, CON-LEG101-MS-1120 | 19d |
| CON-LEG101-LR-2310 |  | Installation of Wash-out Valves [Local – 01 Segment-01] | 15d | 2026-10-24 | 2026-11-09 | CON-LEG101-LR-2190, CON-LEG101-PR-1970 | 19d |
| CON-LEG101-LR-2380 |  | Installation of Air Valves [Local – 01 Segment-01] | 15d | 2026-11-10 | 2026-11-26 | CON-LEG101-LR-2310, CON-LEG101-PR-1970 | 19d |
| CON-LEG101-LR-2460 |  | Installation of Fire Hydrant [Local – 01 Segment-01] | 21d | 2026-11-28 | 2026-12-21 | CON-LEG101-LR-1520, CON-LEG101-LR-2380, CON-LEG101-PR-2470 | 19d |
|  | 6 | **Public Water Utility Distribution** |  | 2026-07-04 | 2026-11-05 |  |  |
|  | 2 | **Pipe Work** |  | 2026-07-04 | 2026-10-08 |  |  |
| CON-LEG101-LR-10040 |  | Excavation for Public Water Utility Distribution Piping [Local – 01 Segment-01] | 17d | 2026-07-04 | 2026-07-22 | CON-LEG101-LR-1300, CON-LEG101-EN-1690, CON-LEG101-EN-1700, CON-LEG101-EN-1710, CON-LEG101-EN-3440 | 9d |
| CON-LEG101-LR-10140 |  | Granular bedding for Public Water Utility Distribution Piping [Local – 01 Segment-01] | 10d | 2026-07-23 | 2026-08-03 | CON-LEG101-LR-10040 | 9d |
| CON-LEG101-LR-10240 |  | Installation of Pipe for Public Water Utility Distribution Piping [Local – 01 Segment-01] | 18d | 2026-08-04 | 2026-08-24 | CON-LEG101-PR-4010, CON-LEG101-LR-10140, CON-LEG101-PR-1660 | 9d |
| CON-LEG101-LR-10340 |  | Testing for Public Water Utility Distribution Piping [Local – 01 Segment-01] | 10d | 2026-08-25 | 2026-09-05 | CON-LEG101-LR-10240 | 9d |
| CON-LEG101-LR-10440 |  | Concrete encasement, pipe dia 110 mm [Local – 01 Segment-01] | 3d | 2026-09-06 | 2026-09-08 | CON-LEG101-LR-10340, CON-LEG101-EN-3450, CON-LEG101-PR-1430 | 9d |
| CON-LEG101-LR-10540 |  | Granular Surround for Public Water Utility Distribution Piping [Local – 01 Segment-01] | 13d | 2026-09-09 | 2026-09-24 | CON-LEG101-LR-10440, CON-LEG101-EN-3450 | 9d |
| CON-LEG101-LR-10640 |  | Installation of Micron Marker Magnetic Tape [Local – 01 Segment-01] | 2d | 2026-09-26 | 2026-09-27 | CON-LEG101-LR-10540 | 9d |
| CON-LEG101-LR-10740 |  | Backfilling to Subgrade Elevation [Local – 01 Segment-01] | 10d | 2026-09-28 | 2026-10-08 | CON-LEG101-LR-10640, CON-LEG101-EN-3440 | 9d |
|  | 1 | **Valves/Chamber** |  | 2026-09-03 | 2026-11-05 |  |  |
| CON-LEG101-LR-1210 |  | Installation of Wash out chambers [Local – 01 Segment-01] | 20d | 2026-09-03 | 2026-09-27 | CON-LEG101-LR-10240, CON-LEG101-PR-1960 SF, CON-LEG101-LR-10240 FF, CON-LEG101-PR-1960, CON-LEG101-LR-2610 | 21d |
| CON-LEG101-LR-1250 |  | Installation of Air Valve chambers [Local – 01 Segment-01] | 20d | 2026-09-28 | 2026-10-20 | CON-LEG101-LR-10240, CON-LEG101-LR-1210, CON-LEG101-PR-1960 | 21d |
| CON-LEG101-LR-1000 |  | Installation of Gate (Sluice) valves (Direct buried) [Local – 01 Segment-01] | 10d | 2026-10-10 | 2026-10-20 | CON-LEG101-PR-1960 SS, CON-LEG101-LR-10240, CON-LEG101-PR-1960, CON-LEG101-LR-10740 | 14d |
| CON-LEG101-LR-1110 |  | Installation of Wash-out Valves [Local – 01 Segment-01] | 7d | 2026-10-21 | 2026-10-28 | CON-LEG101-LR-1210, CON-LEG101-LR-1000, CON-LEG101-PR-1960 | 14d |
| CON-LEG101-LR-1150 |  | Installation of Air Valves [Local – 01 Segment-01] | 7d | 2026-10-29 | 2026-11-05 | CON-LEG101-LR-1250, CON-LEG101-LR-1110, CON-LEG101-PR-1960 | 14d |
|  | 1 | **Electrical Works** |  | 2026-10-10 | 2027-02-15 |  |  |
|  | 3 | **Low Voltage** |  | 2026-10-10 | 2027-02-15 |  |  |
| CON-LEG101-LR-7780 |  | Excavation works for Low Voltage Cables [Local – 01 Segment-01] | 17d | 2026-10-10 | 2026-10-28 | CON-LEG101-LR-4200, CON-LEG101-LR-10910, CON-LEG101-LR-3500, CON-LEG101-LR-3410, CON-LEG101-LR-10740, CON-LEG101-LR-2070, CON-LEG101-LR-6880, CON-LEG101-EN-1680, CON-LEG101-EN-3440, CON-LEG101-MS-1120 | 9d |
| CON-LEG101-LR-7980 |  | Installation of Low Voltage Cables Duct Banks [Local – 01 Segment-01] | 12d | 2026-10-29 | 2026-11-11 | CON-LEG101-LR-7780, CON-LEG101-PR-1320 | 16d |
| CON-LEG101-LR-7880 |  | Installation of Low Voltage Cables [Local – 01 Segment-01] | 21d | 2026-11-12 | 2026-12-06 | CON-LEG101-LR-7980, CON-LEG101-LR-7780, CON-LEG101-PR-1900 | 23d |
| CON-LEG101-LR-8760 |  | Installation of Earthing System [Local – 01 Segment-01] | 7d | 2027-02-03 | 2027-02-15 | CON-LEG101-PR-1320, CON-LEG101-PR-1930, CON-LEG101-LR-7980, CON-LEG101-PR-2550, CON-LEG101-LR-7880, CON-LEG101-PR-1480, CON-LEG101-PR-1310 | 45d |
|  | 10 | **Telecommunications** |  | 2026-10-29 | 2027-03-14 |  |  |
| CON-LEG101-LR-8830 |  | Installation of Sand and soil encased duct banks for primary network [Local – 01 Segment-01] | 20d | 2026-10-29 | 2026-11-21 | CON-LEG101-LR-7780, CON-LEG101-EN-3280, CON-LEG101-EN-3440 | 9d |
| CON-LEG101-LR-8930 |  | Installation of Concrete encased duct banks for primary network [Local – 01 Segment-01] | 11d | 2026-12-07 | 2026-12-19 | CON-LEG101-PR-3180, CON-LEG101-PR-4020, CON-LEG101-LR-8830, CON-LEG101-PR-1430, CON-LEG101-MS-1130, CON-LEG101-LR-7880 | 23d |
| CON-LEG101-LR-9030 |  | Installation of Sand encased duct banks for secondary network [Local – 01 Segment-01] | 14d | 2026-12-20 | 2027-01-04 | CON-LEG101-LR-8930, CON-LEG101-EN-3440, CON-LEG101-LR-7880 | 23d |
| CON-LEG101-LR-9130 |  | Installation of Sand and soil encased duct banks, for combined network of primary and secondary [Local – 01 Segment-01 | 18d | 2027-01-05 | 2027-01-25 | CON-LEG101-LR-9030, CON-LEG101-EN-3440 | 23d |
| CON-LEG101-LR-9230 |  | Installation of Concrete encased duct banks for for combined network of primary and secondary [Local – 01 Segment-01] | 15d | 2027-01-26 | 2027-02-16 | CON-LEG101-PR-3250, CON-LEG101-LR-9130, CON-LEG101-PR-1430 | 23d |
| CON-LEG101-LR-9330 |  | Installation of Reinforced concrete manhole [Local – 01 Segment-01] | 21d | 2027-02-17 | 2027-03-14 | CON-LEG101-LR-9230, CON-LEG101-PR-3260 | 23d |
|  | 11 | **CCTV feeding system and GSM** |  | 2026-11-22 | 2027-03-18 |  |  |
| CON-LEG101-LR-8550 |  | Excavation works for Low Voltage Cables for CCTV feeding system and GSM [Local – 01 Segment-01] | 6d | 2026-11-22 | 2026-11-28 | CON-LEG101-LR-8830, CON-LEG101-EN-3290, CON-LEG101-EN-3440 | 9d |
| CON-LEG101-LR-8620 |  | Installation of Low Voltage Cables for CCTV feeding system and GSM [Local – 01 Segment-01] | 4d | 2026-11-29 | 2026-12-02 | CON-LEG101-LR-8550, CON-LEG101-PR-1900 | 57d |
| CON-LEG101-LR-9430 |  | Installation of Fiber Optic Patch Panel 12 port [Local – 01 Segment-01] | 7d | 2026-12-03 | 2026-12-10 | CON-LEG101-LR-8620, CON-LEG101-PR-3360 | 57d |
| CON-LEG101-LR-9450 |  | Installation of Modular Industrial Switches for main pole [Local – 01 Segment-01] | 7d | 2026-12-19 | 2026-12-26 | CON-LEG101-LR-9430, CON-LEG101-PR-3370 | 51d |
| CON-LEG101-LR-9460 |  | Installation of 8POE ports Industrial Switches for remote poles [Local – 01 Segment-01] | 7d | 2026-12-27 | 2027-01-03 | CON-LEG101-LR-9450, CON-LEG101-PR-3410 | 51d |
| CON-LEG101-LR-9520 |  | Installation of Core Switch [Local – 01 Segment-01] | 3d | 2027-01-17 | 2027-01-19 | CON-LEG101-LR-9460, CON-LEG101-PR-3450 | 40d |
| CON-LEG101-LR-9540 |  | Installation of Access Switch 48 port [Local – 01 Segment-01] | 3d | 2027-01-21 | 2027-01-24 | CON-LEG101-LR-9520, CON-LEG101-PR-3490 | 39d |
| CON-LEG101-LR-9560 |  | Installation of Server [Local – 01 Segment-01] | 3d | 2027-01-25 | 2027-01-27 | CON-LEG101-LR-9540, CON-LEG101-PR-3530 | 39d |
| CON-LEG101-LR-9590 |  | Installation of Stand rack 42U- 19" [Local – 01 Segment-01] | 3d | 2027-01-31 | 2027-02-02 | CON-LEG101-LR-9560, CON-LEG101-PR-3570 | 37d |
| CON-LEG101-LR-9610 |  | Installation of IP Outdoor CCTV POE Camera,5 MP, Metal Housing [Local – 01 Segment-01] | 3d | 2027-02-03 | 2027-02-06 | CON-LEG101-LR-9590, CON-LEG101-PR-3610 | 37d |
| CON-LEG101-LR-9690 |  | Installation of Outdoor PTZ IP66 [Local – 01 Segment-01] | 2d | 2027-02-07 | 2027-02-08 | CON-LEG101-LR-9610, CON-LEG101-PR-3650 | 37d |
| CON-LEG101-LR-9780 |  | Installation of Security workstation with 1 x 19" LED screen [Local – 01 Segment-01] | 1d | 2027-02-14 | 2027-02-14 | CON-LEG101-LR-9690, CON-LEG101-PR-3690 | 37d |

| ID | WBS | Task | Duration | Start | Finish | Predecessors | Total float |
| --- | --- | --- | --- | --- | --- | --- | --- |
| CON-LEG101-LR-9790 |  | Installation of LED Screen 43" (24/7 operation) with Ethernet decoders [Local – 01 Segment-01] | 2d | 2027-02-15 | 2027-02-16 | CON-LEG101-PR-3950, CON-LEG101-LR-9780, CON-LEG101-PR-3290 | 37d |
| CON-LEG101-LR-9830 |  | Installation of Network Video Recorder 4k 64 Channel [Local – 01 Segment-01] | 1d | 2027-02-27 | 2027-02-27 | CON-LEG101-PR-3960, CON-LEG101-LR-9790, CON-LEG101-PR-3760 | 30d |
| CON-LEG101-LR-9840 |  | Installation of Keypad [Local – 01 Segment-01] | 2d | 2027-03-13 | 2027-03-14 | CON-LEG101-PR-3970, CON-LEG101-LR-9830, CON-LEG101-PR-3790 | 19d |
| CON-LEG101-LR-9850 |  | Installation of Horizontal Power Distribution Unit (min 8 outlets) [Local – 01 Segment-01] | 2d | 2027-03-15 | 2027-03-16 | CON-LEG101-LR-9840, CON-LEG101-PR-3730 | 19d |
| CON-LEG101-LR-9870 |  | Installation of 35 Meters mono pole with Double Platform for Access Points [Local – 01 Segment-01] | 2d | 2027-03-17 | 2027-03-18 | CON-LEG101-LR-9850, CON-LEG101-PR-3830 | 19d |
| CON-LEG101-LR-9880 |  | Installation of 25 Meters pole for CCTV Cameras [Local – 01 Segment-01] | 2d | 2027-03-17 | 2027-03-18 | CON-LEG101-LR-9870 SS, CON-LEG101-PR-3870 | 19d |
| CON-LEG101-LR-9940 |  | Installation of Short Range wireless point to point wireless bridge [Local – 01 Segment-01] | 2d | 2027-03-17 | 2027-03-18 | CON-LEG101-LR-9880 SS, CON-LEG101-PR-3910 | 19d |
|  | 12 | **Earthing System** |  | 2027-03-17 | 2027-03-18 |  |  |
| CON-LEG101-LR-8280 |  | Installation of Earthing for Distribution panels,SL feeder pillars, KWH, Unit substations and RMU [Local – 01 Segment-01 | 2d | 2027-03-17 | 2027-03-18 | CON-LEG101-PR-1480, CON-LEG101-LR-9940 SS, CON-LEG101-PR-1310 | 19d |
|  | 9 | **Road Lighting** |  | 2026-10-27 | 2026-12-30 |  |  |
| CON-LEG101-LR-8080 |  | Installation of Lighting poles [Local – 01 Segment-01] | 17d | 2026-10-27 | 2026-11-15 | CON-LEG101-PR-1950, CON-LEG101-LR-10740, CON-LEG101-LR-2070, CON-LEG101-LR-3410, CON-LEG101-LR-4200, CON-LEG101-PR-1910 | 16d |
| CON-LEG101-LR-8180 |  | Installation of Street Lighting Luminaire [Local – 01 Segment-01] | 12d | 2026-11-16 | 2026-11-29 | CON-LEG101-LR-8080, CON-LEG101-PR-1920 | 18d |
| CON-LEG101-LR-7420 |  | Installation of Unit Substation Including concrete foundations and fencing [Local – 01 Segment-01] | 7d | 2026-11-29 | 2026-12-06 | CON-LEG101-LR-8080, CON-LEG101-LR-8550, CON-LEG101-EN-3310, CON-LEG101-EN-3320, CON-LEG101-EN-3330, CON-LEG101-EN-3360, CON-LEG101-PR-1890 | 9d |
| CON-LEG101-LR-8430 |  | Installation of Street Lighting feeder pillars / Lighting panels [Local – 01 Segment-01] | 3d | 2026-11-30 | 2026-12-02 | CON-LEG101-LR-8080, CON-LEG101-PR-1940, CON-LEG101-PR-2550, CON-LEG101-LR-8180 | 18d |
| CON-LEG101-LR-7500 |  | Installation of Ring Main Unit RMU [Local – 01 Segment-01] | 15d | 2026-12-07 | 2026-12-23 | CON-LEG101-LR-8080, CON-LEG101-LR-7420, CON-LEG101-PR-2510 | 9d |
| CON-LEG101-LR-8330 |  | Installation of Earthing for Streetlighting feeders for every end pole circuits. [Local – 01 Segment-01] | 6d | 2026-12-24 | 2026-12-30 | CON-LEG101-LR-7500, CON-LEG101-LR-7420, CON-LEG101-LR-8430, CON-LEG101-PR-1480, CON-LEG101-LR-8180, CON-LEG101-PR-1310 | 9d |
|  | 2 | **LOCAL - 01 Segment-02 (From 1+066 to 2+133)** |  | 2026-06-15 | 2027-03-06 |  |  |
|  | 5 | **TSE Network** |  | 2026-06-15 | 2027-01-07 |  |  |
|  | 2 | **Pipe Work** |  | 2026-06-15 | 2026-09-26 |  |  |
| CON-LEG101-LR-1310 |  | Excavation for TSE Network [Local – 01 Segment-02] | 10d | 2026-06-15 | 2026-06-25 | CON-LEG101-LR-3420, CON-LEG101-LR-4210, CON-LEG101-LR-10960, CON-LEG101-EN-1720, CON-LEG101-EN-1730, CON-LEG101-EN-1740, CON-LEG101-EN-1810 | 11d |
| CON-LEG101-LR-1420 |  | Granular bedding for TSE Network [Local – 01 Segment-02] | 7d | 2026-06-27 | 2026-07-04 | CON-LEG101-LR-1310 | 11d |
| CON-LEG101-LR-1530 |  | Installation of Pipe for TSE Network [Local – 01 Segment-02] | 20d | 2026-07-05 | 2026-07-27 | CON-LEG101-PR-2590, CON-LEG101-LR-1420, CON-LEG101-PR-1690 | 11d |
| CON-LEG101-LR-1650 |  | Testing for TSE Network [Local – 01 Segment-02] | 14d | 2026-07-28 | 2026-08-12 | CON-LEG101-LR-1530 | 11d |
| CON-LEG101-LR-1760 |  | Concrete encasement, pipe dia 110 mm [Local – 01 Segment-02] | 3d | 2026-08-13 | 2026-08-16 | CON-LEG101-LR-1650, CON-LEG101-EN-3450, CON-LEG101-PR-1430 | 11d |
| CON-LEG101-LR-1860 |  | Granular Surround for TSE Network [Local – 01 Segment-02] | 14d | 2026-08-17 | 2026-09-01 | CON-LEG101-LR-1760, CON-LEG101-EN-3450 | 11d |
| CON-LEG101-LR-1970 |  | Installation of Micron Marker Magnetic Tape [Local – 01 Segment-02] | 6d | 2026-09-02 | 2026-09-08 | CON-LEG101-LR-1860 | 11d |
| CON-LEG101-LR-2090 |  | Backfilling to Subgrade Elevation [Local – 01 Segment-02] | 14d | 2026-09-09 | 2026-09-26 | CON-LEG101-LR-1970, CON-LEG101-EN-3440 | 11d |
|  | 1 | **Valves/Chamber** |  | 2026-09-09 | 2027-01-07 |  |  |
| CON-LEG101-LR-2620 |  | Installation of Wash out chambers [Local – 01 Segment-02] | 21d | 2026-09-09 | 2026-10-04 | CON-LEG101-LR-1530, CON-LEG101-LR-2090 SS, CON-LEG101-PR-1970 | 21d |
| CON-LEG101-LR-2690 |  | Installation of Air Valve chambers [Local – 01 Segment-02] | 21d | 2026-10-05 | 2026-10-28 | CON-LEG101-LR-1530, CON-LEG101-LR-2620, CON-LEG101-PR-1970 | 21d |
| CON-LEG101-LR-2200 |  | Installation of Gate (Sluice) valves (Direct buried) [Local – 01 Segment-02] | 10d | 2026-11-07 | 2026-11-17 | CON-LEG101-LR-2620, CON-LEG101-LR-2690, CON-LEG101-LR-1530, CON-LEG101-PR-1970, CON-LEG101-LR-1150 | 14d |
| CON-LEG101-LR-2320 |  | Installation of Wash-out Valves [Local – 01 Segment-02] | 19d | 2026-11-18 | 2026-12-09 | CON-LEG101-LR-2620, CON-LEG101-LR-2200, CON-LEG101-PR-1970 | 14d |
| CON-LEG101-LR-2390 |  | Installation of Air Valves [Local – 01 Segment-02] | 15d | 2026-12-10 | 2026-12-27 | CON-LEG101-LR-2690, CON-LEG101-LR-2320, CON-LEG101-PR-1970 | 14d |
| CON-LEG101-LR-2470 |  | Installation of Fire Hydrant [Local – 01 Segment-02] | 10d | 2026-12-28 | 2027-01-07 | CON-LEG101-LR-2390, CON-LEG101-PR-2470, CON-LEG101-LR-2310, CON-LEG101-LR-2460 | 14d |
|  | 6 | **Public Water Utility Distribution** |  | 2026-06-15 | 2027-03-06 |  |  |
|  | 2 | **Pipe Work** |  | 2026-06-15 | 2026-10-01 |  |  |
| CON-LEG101-LR-10050 |  | Excavation for Public Water Utility Distribution Piping [Local – 01 Segment-02] | 17d | 2026-06-15 | 2026-07-04 | CON-LEG101-LR-3420, CON-LEG101-LR-4210, CON-LEG101-LR-10960, CON-LEG101-EN-1690, CON-LEG101-EN-1700, CON-LEG101-EN-1710, CON-LEG101-EN-3440 | 6d |
| CON-LEG101-LR-10150 |  | Granular bedding for Public Water Utility Distribution Piping [Local – 01 Segment-02] | 13d | 2026-07-05 | 2026-07-19 | CON-LEG101-LR-10050 | 6d |
| CON-LEG101-LR-10250 |  | Installation of Pipe for Public Water Utility Distribution Piping [Local – 01 Segment-02] | 18d | 2026-07-20 | 2026-08-09 | CON-LEG101-PR-4010, CON-LEG101-LR-10150, CON-LEG101-PR-1660 | 6d |
| CON-LEG101-LR-10350 |  | Testing for Public Water Utility Distribution Piping [Local – 01 Segment-02] | 13d | 2026-08-10 | 2026-08-24 | CON-LEG101-LR-10250 | 6d |
| CON-LEG101-LR-10450 |  | Concrete encasement, pipe dia 110 mm [Local – 01 Segment-02] | 7d | 2026-08-25 | 2026-09-01 | CON-LEG101-LR-10350, CON-LEG101-EN-3450, CON-LEG101-PR-1430 | 6d |
| CON-LEG101-LR-10550 |  | Granular Surround for Public Water Utility Distribution Piping [Local – 01 Segment-02] | 13d | 2026-09-02 | 2026-09-16 | CON-LEG101-LR-10450, CON-LEG101-EN-3450 | 6d |
| CON-LEG101-LR-10650 |  | Installation of Micron Marker Magnetic Tape [Local – 01 Segment-02] | 2d | 2026-09-17 | 2026-09-19 | CON-LEG101-LR-10550 | 6d |
| CON-LEG101-LR-10750 |  | Backfilling to Subgrade Elevation [Local – 01 Segment-02] | 10d | 2026-09-20 | 2026-10-01 | CON-LEG101-LR-10650, CON-LEG101-EN-3440 | 6d |
|  | 1 | **Valves/Chamber** |  | 2026-10-29 | 2027-03-06 |  |  |
| CON-LEG101-LR-1220 |  | Installation of Wash out chambers [Local – 01 Segment-02] | 21d | 2026-10-29 | 2026-11-22 | CON-LEG101-LR-10750, CON-LEG101-LR-10250, CON-LEG101-LR-2690, CON-LEG101-PR-1960 | 30d |
| CON-LEG101-LR-1260 |  | Installation of Air Valve chambers [Local – 01 Segment-02] | 21d | 2026-11-23 | 2026-12-16 | CON-LEG101-LR-10250, CON-LEG101-LR-10750, CON-LEG101-LR-1220, CON-LEG101-PR-1960 | 30d |
| CON-LEG101-LR-1010 |  | Installation of Gate (Sluice) valves (Direct buried) [Local – 01 Segment-02] | 21d | 2026-12-17 | 2027-01-10 | CON-LEG101-LR-1220, CON-LEG101-LR-1260, CON-LEG101-LR-10250, CON-LEG101-PR-1960 | 30d |
| CON-LEG101-LR-1120 |  | Installation of Wash-out Valves [Local – 01 Segment-02] | 21d | 2027-01-11 | 2027-02-03 | CON-LEG101-LR-1220, CON-LEG101-LR-1010, CON-LEG101-PR-1960 | 30d |
| CON-LEG101-LR-1160 |  | Installation of Air Valves [Local – 01 Segment-02] | 21d | 2027-02-04 | 2027-03-06 | CON-LEG101-LR-1260, CON-LEG101-LR-1120, CON-LEG101-PR-1960 | 30d |
|  | 1 | **Electrical Works** |  | 2026-10-03 | 2027-02-16 |  |  |
|  | 3 | **Low Voltage** |  | 2026-10-03 | 2027-02-16 |  |  |
| CON-LEG101-LR-7790 |  | Excavation works for Low Voltage Cables [Local – 01 Segment-02] | 17d | 2026-10-03 | 2026-10-21 | CON-LEG101-LR-10960, CON-LEG101-LR-4210, CON-LEG101-LR-3510, CON-LEG101-LR-3420, CON-LEG101-LR-2090, CON-LEG101-LR-10750, CON-LEG101-LR-6890, CON-LEG101-EN-1680, CON-LEG101-EN-3440 | 6d |
| CON-LEG101-LR-7990 |  | Installation of Low Voltage Cables Duct Banks [Local – 01 Segment-02] | 7d | 2026-10-22 | 2026-10-29 | CON-LEG101-LR-7790, CON-LEG101-PR-1320 | 13d |
| CON-LEG101-LR-7890 |  | Installation of Low Voltage Cables [Local – 01 Segment-02] | 17d | 2026-10-31 | 2026-11-18 | CON-LEG101-LR-7990, CON-LEG101-LR-7790, CON-LEG101-PR-1900 | 13d |
| CON-LEG101-LR-8770 |  | Installation of Earthing System [Local – 01 Segment-02] | 8d | 2027-02-03 | 2027-02-16 | CON-LEG101-PR-1320, CON-LEG101-LR-7990, CON-LEG101-PR-1930, CON-LEG101-LR-7890, CON-LEG101-PR-1480, CON-LEG101-PR-1310, CON-LEG101-LR-8330 | 44d |
|  | 10 | **Telecommunications** |  | 2026-10-22 | 2027-02-07 |  |  |
| CON-LEG101-LR-8840 |  | Installation of Sand and soil encased duct banks for primary network [Local – 01 Segment-02] | 20d | 2026-10-22 | 2026-11-14 | CON-LEG101-LR-7790, CON-LEG101-EN-3280, CON-LEG101-EN-3440 | 6d |
| CON-LEG101-LR-8940 |  | Installation of Concrete encased duct banks for primary network [Local – 01 Segment-02] | 11d | 2026-11-15 | 2026-11-26 | CON-LEG101-PR-3180, CON-LEG101-PR-4020, CON-LEG101-LR-8840, CON-LEG101-PR-1430, CON-LEG101-LR-7990 | 6d |
| CON-LEG101-LR-9040 |  | Installation of Sand encased duct banks for secondary network [Local – 01 Segment-02] | 14d | 2026-11-28 | 2026-12-13 | CON-LEG101-LR-8940, CON-LEG101-EN-3440, CON-LEG101-LR-7890, CON-LEG101-MS-1130 | 6d |
| CON-LEG101-LR-9140 |  | Installation of Sand and soil encased duct banks, for combined network of primary and secondary [Local – 01 Segment-02 | 18d | 2026-12-14 | 2027-01-03 | CON-LEG101-PR-3250, CON-LEG101-LR-9040, CON-LEG101-EN-3440 | 6d |
| CON-LEG101-LR-9240 |  | Installation of Concrete encased duct banks for for combined network of primary and secondary [Local – 01 Segment-02] | 9d | 2027-01-04 | 2027-01-13 | CON-LEG101-LR-9140, CON-LEG101-PR-1430, CON-LEG101-LR-8330 | 6d |
| CON-LEG101-LR-9340 |  | Installation of Reinforced concrete manhole [Local – 01 Segment-02] | 21d | 2027-01-14 | 2027-02-07 | CON-LEG101-LR-9240, CON-LEG101-PR-3260 | 6d |
|  | 11 | **CCTV feeding system and GSM** |  | 2027-01-04 | 2027-02-07 |  |  |
| CON-LEG101-LR-8560 |  | Excavation works for Low Voltage Cables for CCTV feeding system and GSM [Local – 01 Segment-02] | 8d | 2027-01-04 | 2027-01-12 | CON-LEG101-LR-9040, CON-LEG101-LR-9140, CON-LEG101-LR-8840, CON-LEG101-EN-3290, CON-LEG101-EN-3440 | 6d |
| CON-LEG101-LR-8630 |  | Installation of Low Voltage Cables for CCTV feeding system and GSM [Local – 01 Segment-02] | 8d | 2027-01-13 | 2027-01-21 | CON-LEG101-LR-8560, CON-LEG101-PR-1900 | 6d |
| CON-LEG101-LR-9620 |  | Installation of IP Outdoor CCTV POE Camera,5 MP, Metal Housing [Local – 01 Segment-02] | 5d | 2027-01-23 | 2027-01-27 | CON-LEG101-LR-8630, CON-LEG101-PR-3610 | 6d |
| CON-LEG101-LR-9700 |  | Installation of Outdoor PTZ IP66 [Local – 01 Segment-02] | 2d | 2027-01-28 | 2027-01-30 | CON-LEG101-LR-9620, CON-LEG101-PR-3650 | 6d |
| CON-LEG101-LR-9950 |  | Installation of Short Range wireless point to point wireless bridge [Local – 01 Segment-02] | 7d | 2027-01-31 | 2027-02-07 | CON-LEG101-LR-9700, CON-LEG101-PR-3910 | 6d |
|  | 12 | **Earthing System** |  | 2027-02-08 | 2027-02-18 |  |  |

| ID | WBS | Task | Duration | Start | Finish | Predecessors | Total float |
| --- | --- | --- | --- | --- | --- | --- | --- |
| CON-LEG101-LR-8290 |  | Installation of Earthing for Distribution panels,SL feeder pillars, KWH, Unit substations and RMU [Local – 01 Segment-02 | 6d | 2027-02-08 | 2027-02-18 | CON-LEG101-LR-9950, CON-LEG101-LR-8190, CON-LEG101-LR-9340, CON-LEG101-PR-1480, CON-LEG101-LR-8560, CON-LEG101-PR-1310 | 6d |
|  | 9 | **Road Lighting** |  | 2026-11-16 | 2026-12-22 |  |  |
| CON-LEG101-LR-8090 |  | Installation of Lighting poles [Local – 01 Segment-02] | 17d | 2026-11-16 | 2026-12-05 | CON-LEG101-PR-1950, CON-LEG101-LR-8080, CON-LEG101-PR-1910 | 16d |
| CON-LEG101-LR-8440 |  | Installation of Street Lighting feeder pillars / Lighting panels [Local – 01 Segment-02] | 3d | 2026-12-06 | 2026-12-08 | CON-LEG101-LR-8090, CON-LEG101-PR-1940, CON-LEG101-PR-2550, CON-LEG101-LR-8430 | 16d |
| CON-LEG101-LR-8190 |  | Installation of Street Lighting Luminaire [Local – 01 Segment-02] | 6d | 2026-12-09 | 2026-12-15 | CON-LEG101-LR-8090, CON-LEG101-PR-1920, CON-LEG101-LR-8440 | 16d |
| CON-LEG101-LR-8340 |  | Installation of Earthing for Streetlighting feeders for every end pole circuits. [Local – 01 Segment-02] | 6d | 2026-12-16 | 2026-12-22 | CON-LEG101-LR-8440, CON-LEG101-LR-8090, CON-LEG101-LR-8190, CON-LEG101-PR-1480, CON-LEG101-PR-1310 | 16d |
|  | 3 | **LOCAL - 01 Segment-03 (From 2+133 to 3+200)** |  | 2026-07-15 | 2027-03-13 |  |  |
|  | 5 | **TSE Network** |  | 2026-07-15 | 2027-01-14 |  |  |
|  | 2 | **Pipe Work** |  | 2026-07-15 | 2026-11-07 |  |  |
| CON-LEG101-LR-1320 |  | Excavation for TSE Network [Local – 01 Segment-03] | 19d | 2026-07-15 | 2026-08-05 | CON-LEG101-LR-3520, CON-LEG101-LR-3430, CON-LEG101-LR-11060, CON-LEG101-LR-4220, CON-LEG101-LR-2800, CON-LEG101-EN-1720, CON-LEG101-EN-1730, CON-LEG101-EN-1740, CON-LEG101-EN-1810 | 0d |
| CON-LEG101-LR-1430 |  | Granular bedding for TSE Network [Local – 01 Segment-03] | 8d | 2026-08-06 | 2026-08-15 | CON-LEG101-LR-1320 | 8d |
| CON-LEG101-LR-1550 |  | Installation of Pipe for TSE Network [Local – 01 Segment-03] | 20d | 2026-08-16 | 2026-09-07 | CON-LEG101-PR-2590, CON-LEG101-LR-1430, CON-LEG101-PR-1690 | 8d |
| CON-LEG101-LR-1660 |  | Testing for TSE Network [Local – 01 Segment-03] | 14d | 2026-09-08 | 2026-09-24 | CON-LEG101-LR-1550 | 8d |
| CON-LEG101-LR-1770 |  | Concrete encasement, pipe dia 110 mm [Local – 01 Segment-03] | 3d | 2026-09-26 | 2026-09-28 | CON-LEG101-LR-1660, CON-LEG101-EN-3450, CON-LEG101-PR-1430 | 8d |
| CON-LEG101-LR-1870 |  | Granular Surround for TSE Network [Local – 01 Segment-03] | 14d | 2026-09-29 | 2026-10-14 | CON-LEG101-LR-1770, CON-LEG101-EN-3450 | 8d |
| CON-LEG101-LR-1980 |  | Installation of Micron Marker Magnetic Tape [Local – 01 Segment-03] | 6d | 2026-10-15 | 2026-10-21 | CON-LEG101-LR-1870 | 8d |
| CON-LEG101-LR-2100 |  | Backfilling to Subgrade Elevation [Local – 01 Segment-03] | 14d | 2026-10-22 | 2026-11-07 | CON-LEG101-LR-1980, CON-LEG101-EN-3440 | 8d |
|  | 1 | **Valves/Chamber** |  | 2026-11-08 | 2027-01-14 |  |  |
| CON-LEG101-LR-2630 |  | Installation of Wash out chambers [Local – 01 Segment-03] | 15d | 2026-11-08 | 2026-11-24 | CON-LEG101-LR-1550, CON-LEG101-PR-1970, CON-LEG101-LR-2100 | 8d |
| CON-LEG101-LR-15040 |  | Installation of Air Valve chambers [Local – 01 Segment-03] | 10d | 2026-11-25 | 2026-12-06 | CON-LEG101-LR-2630 | 18d |
| CON-LEG101-LR-2210 |  | Installation of Gate (Sluice) valves (Direct buried) [Local – 01 Segment-03] | 19d | 2026-11-25 | 2026-12-16 | CON-LEG101-LR-2630, CON-LEG101-LR-1550, CON-LEG101-PR-1970 | 8d |
| CON-LEG101-LR-15050 |  | Installation of Air Valves [Local – 01 Segment-03] | 10d | 2026-12-07 | 2026-12-17 | CON-LEG101-LR-15040 | 18d |
| CON-LEG101-LR-2330 |  | Installation of Wash-out Valves [Local – 01 Segment-03] | 15d | 2026-12-17 | 2027-01-03 | CON-LEG101-LR-2210, CON-LEG101-PR-1970 | 8d |
| CON-LEG101-LR-2480 |  | Installation of Fire Hydrant [Local – 01 Segment-03] | 10d | 2027-01-04 | 2027-01-14 | CON-LEG101-LR-2330, CON-LEG101-PR-1970, CON-LEG101-LR-15050, CON-LEG101-PR-2470, CON-LEG101-LR-2470 SS | 8d |
|  | 6 | **Public Water Utility Distribution** |  | 2026-08-06 | 2027-01-20 |  |  |
|  | 2 | **Pipe Work** |  | 2026-08-06 | 2026-11-18 |  |  |
| CON-LEG101-LR-10060 |  | Excavation for Public Water Utility Distribution Piping [Local – 01 Segment-03] | 17d | 2026-08-06 | 2026-08-25 | CON-LEG101-LR-1320, CON-LEG101-EN-1690, CON-LEG101-EN-1700, CON-LEG101-EN-1710, CON-LEG101-EN-3440 | 0d |
| CON-LEG101-LR-10160 |  | Granular bedding for Public Water Utility Distribution Piping [Local – 01 Segment-03] | 13d | 2026-08-26 | 2026-09-09 | CON-LEG101-LR-10060 | 0d |
| CON-LEG101-LR-10260 |  | Installation of Pipe for Public Water Utility Distribution Piping [Local – 01 Segment-03] | 18d | 2026-09-10 | 2026-10-01 | CON-LEG101-PR-4010, CON-LEG101-LR-10160, CON-LEG101-PR-1660 | 0d |
| CON-LEG101-LR-10360 |  | Testing for Public Water Utility Distribution Piping [Local – 01 Segment-03] | 13d | 2026-10-03 | 2026-10-17 | CON-LEG101-LR-10260 | 0d |
| CON-LEG101-LR-10460 |  | Concrete encasement, pipe dia 110 mm [Local – 01 Segment-03] | 3d | 2026-10-18 | 2026-10-20 | CON-LEG101-LR-10360, CON-LEG101-EN-3450, CON-LEG101-PR-1430 | 0d |
| CON-LEG101-LR-10560 |  | Granular Surround for Public Water Utility Distribution Piping [Local – 01 Segment-03] | 13d | 2026-10-21 | 2026-11-04 | CON-LEG101-LR-10460, CON-LEG101-EN-3450 | 0d |
| CON-LEG101-LR-10660 |  | Installation of Micron Marker Magnetic Tape [Local – 01 Segment-03] | 2d | 2026-11-05 | 2026-11-07 | CON-LEG101-LR-10560 | 0d |
| CON-LEG101-LR-10760 |  | Backfilling to Subgrade Elevation [Local – 01 Segment-03] | 10d | 2026-11-08 | 2026-11-18 | CON-LEG101-LR-10660, CON-LEG101-EN-3440 | 0d |
|  | 1 | **Valves/Chamber** |  | 2026-11-08 | 2027-01-20 |  |  |
| CON-LEG101-LR-1230 |  | Installation of Wash out chambers [Local – 01 Segment-03] | 20d | 2026-11-08 | 2026-11-30 | CON-LEG101-LR-10260, CON-LEG101-PR-1960, CON-LEG101-LR-10660 | 13d |
| CON-LEG101-LR-1270 |  | Installation of Air Valve chambers [Local – 01 Segment-03] | 20d | 2026-12-01 | 2026-12-23 | CON-LEG101-LR-10260, CON-LEG101-LR-1230, CON-LEG101-PR-1960 | 13d |
| CON-LEG101-LR-1020 |  | Installation of Gate (Sluice) valves (Direct buried) [Local – 01 Segment-03] | 8d | 2026-12-24 | 2027-01-02 | CON-LEG101-LR-1270, CON-LEG101-LR-10260, CON-LEG101-PR-1960, CON-LEG101-LR-15050 | 13d |
| CON-LEG101-LR-1130 |  | Installation of Wash-out Valves [Local – 01 Segment-03] | 8d | 2027-01-03 | 2027-01-11 | CON-LEG101-LR-1020, CON-LEG101-PR-1960 | 13d |
| CON-LEG101-LR-1170 |  | Installation of Air Valves [Local – 01 Segment-03] | 8d | 2027-01-12 | 2027-01-20 | CON-LEG101-LR-1130, CON-LEG101-PR-1960 | 13d |
|  | 1 | **Electrical Works** |  | 2026-11-19 | 2027-02-16 |  |  |
|  | 3 | **Low Voltage** |  | 2026-11-19 | 2027-02-16 |  |  |
| CON-LEG101-LR-7800 |  | Excavation works for Low Voltage Cables [Local – 01 Segment-03] | 17d | 2026-11-19 | 2026-12-08 | CON-LEG101-LR-3520, CON-LEG101-LR-3430, CON-LEG101-LR-11060, CON-LEG101-LR-4220, CON-LEG101-LR-2100, CON-LEG101-LR-10760, CON-LEG101-LR-6900, CON-LEG101-EN-1680, CON-LEG101-EN-3440 | 0d |
| CON-LEG101-LR-8000 |  | Installation of Low Voltage Cables Duct Banks [Local – 01 Segment-03] | 7d | 2026-12-09 | 2026-12-16 | CON-LEG101-LR-7800, CON-LEG101-PR-1320 | 6d |
| CON-LEG101-LR-7900 |  | Installation of Low Voltage Cables [Local – 01 Segment-03] | 17d | 2026-12-17 | 2027-01-05 | CON-LEG101-LR-8000, CON-LEG101-LR-7800, CON-LEG101-PR-1900 | 6d |
| CON-LEG101-LR-8780 |  | Installation of Earthing System [Local – 01 Segment-03] | 8d | 2027-02-03 | 2027-02-16 | CON-LEG101-PR-1320, CON-LEG101-LR-8000, CON-LEG101-PR-1930, CON-LEG101-LR-7900, CON-LEG101-PR-1480, CON-LEG101-PR-1310 | 44d |
|  | 10 | **Telecommunications** |  | 2026-11-19 | 2027-03-03 |  |  |
| CON-LEG101-LR-8850 |  | Installation of Sand and soil encased duct banks for primary network [Local – 01 Segment-03] | 15d | 2026-11-19 | 2026-12-06 | CON-LEG101-LR-7800 SS, CON-LEG101-EN-3280, CON-LEG101-EN-3440 | 7d |
| CON-LEG101-LR-8950 |  | Installation of Concrete encased duct banks for primary network [Local – 01 Segment-03] | 11d | 2026-12-07 | 2026-12-19 | CON-LEG101-PR-3180, CON-LEG101-PR-4020, CON-LEG101-LR-8850, CON-LEG101-PR-1430 | 7d |
| CON-LEG101-LR-9050 |  | Installation of Sand encased duct banks for secondary network [Local – 01 Segment-03] | 14d | 2026-12-20 | 2027-01-04 | CON-LEG101-LR-8950, CON-LEG101-EN-3440 | 7d |
| CON-LEG101-LR-9150 |  | Installation of Sand and soil encased duct banks, for combined network of primary and secondary [Local – 01 Segment-03 | 18d | 2027-01-06 | 2027-01-26 | CON-LEG101-LR-9050, CON-LEG101-EN-3440, CON-LEG101-LR-7900 | 6d |
| CON-LEG101-LR-9250 |  | Installation of Concrete encased duct banks for for combined network of primary and secondary [Local – 01 Segment-03] | 9d | 2027-01-27 | 2027-02-06 | CON-LEG101-PR-3250, CON-LEG101-LR-9150, CON-LEG101-PR-1430 | 6d |
| CON-LEG101-LR-9350 |  | Installation of Reinforced concrete manhole [Local – 01 Segment-03] | 17d | 2027-02-07 | 2027-03-03 | CON-LEG101-LR-9250, CON-LEG101-PR-3260 | 6d |
|  | 11 | **CCTV feeding system and GSM** |  | 2027-01-05 | 2027-02-23 |  |  |
| CON-LEG101-LR-8570 |  | Excavation works for Low Voltage Cables for CCTV feeding system and GSM [Local – 01 Segment-03] | 10d | 2027-01-05 | 2027-01-16 | CON-LEG101-LR-8850, CON-LEG101-EN-3290, CON-LEG101-EN-3440, CON-LEG101-LR-9050 | 17d |
| CON-LEG101-LR-8640 |  | Installation of Low Voltage Cables for CCTV feeding system and GSM [Local – 01 Segment-03] | 10d | 2027-01-21 | 2027-02-01 | CON-LEG101-LR-8570, CON-LEG101-PR-1900, CON-LEG101-LR-1170 | 13d |
| CON-LEG101-LR-9630 |  | Installation of IP Outdoor CCTV POE Camera,5 MP, Metal Housing [Local – 01 Segment-03] | 5d | 2027-02-02 | 2027-02-07 | CON-LEG101-LR-8640, CON-LEG101-PR-3610 | 13d |
| CON-LEG101-LR-9710 |  | Installation of Outdoor PTZ IP66 [Local – 01 Segment-03] | 2d | 2027-02-08 | 2027-02-14 | CON-LEG101-LR-9630, CON-LEG101-PR-3650 | 13d |
| CON-LEG101-LR-9960 |  | Installation of Short Range wireless point to point wireless bridge [Local – 01 Segment-03] | 7d | 2027-02-15 | 2027-02-23 | CON-LEG101-LR-9710, CON-LEG101-PR-3910 | 13d |
|  | 12 | **Earthing System** |  | 2027-03-04 | 2027-03-13 |  |  |
| CON-LEG101-LR-8300 |  | Installation of Earthing for Distribution panels,SL feeder pillars, KWH, Unit substations and RMU [Local – 01 Segment-03 | 8d | 2027-03-04 | 2027-03-13 | CON-LEG101-LR-9350, CON-LEG101-LR-8100, CON-LEG101-LR-8200, CON-LEG101-LR-8450, CON-LEG101-PR-1480, CON-LEG101-LR-9960, CON-LEG101-PR-1310 | 6d |
|  | 9 | **Road Lighting** |  | 2026-12-09 | 2027-01-12 |  |  |
| CON-LEG101-LR-8100 |  | Installation of Lighting poles [Local – 01 Segment-03] | 17d | 2026-12-09 | 2026-12-28 | CON-LEG101-PR-1950, CON-LEG101-LR-7800, CON-LEG101-PR-1910 | 0d |
| CON-LEG101-LR-8200 |  | Installation of Street Lighting Luminaire [Local – 01 Segment-03] | 6d | 2026-12-29 | 2027-01-04 | CON-LEG101-LR-8100, CON-LEG101-PR-1920 | 5d |
| CON-LEG101-LR-8450 |  | Installation of Street Lighting feeder pillars / Lighting panels [Local – 01 Segment-03] | 7d | 2026-12-29 | 2027-01-05 | CON-LEG101-LR-8100, CON-LEG101-PR-1940, CON-LEG101-PR-2550 | 4d |
| CON-LEG101-LR-8350 |  | Installation of Earthing for Streetlighting feeders for every end pole circuits. [Local – 01 Segment-03] | 6d | 2027-01-06 | 2027-01-12 | CON-LEG101-LR-8450, CON-LEG101-PR-1480, CON-LEG101-LR-8200, CON-LEG101-PR-1310, CON-LEG101-LR-8340 | 4d |
|  | 2 | **Local – 02** |  | 2026-06-16 | 2027-03-06 |  |  |
|  | 5 | **TSE Network** |  | 2026-06-16 | 2027-01-14 |  |  |
|  | 2 | **Pipe Work** |  | 2026-06-16 | 2026-09-19 |  |  |
| CON-LEG101-LR-1330 |  | Excavation for TSE Network [Local – 02 ] | 13d | 2026-06-16 | 2026-06-30 | CON-LEG101-LR-3440, CON-LEG101-LR-3530, CON-LEG101-LR-11170, CON-LEG101-LR-4230, CON-LEG101-LR-2810, CON-LEG101-EN-1720, CON-LEG101-EN-1730, CON-LEG101-EN-1740, CON-LEG101-EN-1810 | 6d |

| ID | WBS | Task | Duration | Start | Finish | Predecessors | Total float |
| --- | --- | --- | --- | --- | --- | --- | --- |
| CON-LEG101-LR-1440 |  | Granular bedding for TSE Network [Local – 02 ] | 10d | 2026-07-01 | 2026-07-12 | CON-LEG101-LR-1330 | 6d |
| CON-LEG101-LR-1560 |  | Installation of Pipe for TSE Network [Local – 02 ] | 14d | 2026-07-13 | 2026-07-28 | CON-LEG101-PR-2590, CON-LEG101-LR-1440, CON-LEG101-PR-1690 | 6d |
| CON-LEG101-LR-1670 |  | Testing for TSE Network [Local – 02 ] | 10d | 2026-07-29 | 2026-08-09 | CON-LEG101-LR-1560 | 6d |
| CON-LEG101-LR-1780 |  | Concrete encasement, pipe dia 110 mm [Local – 02 ] | 2d | 2026-08-10 | 2026-08-11 | CON-LEG101-LR-1670, CON-LEG101-EN-3450, CON-LEG101-PR-1430 | 6d |
| CON-LEG101-LR-1880 |  | Granular Surround for TSE Network [Local – 02 ] | 10d | 2026-08-12 | 2026-08-23 | CON-LEG101-LR-1780, CON-LEG101-EN-3450 | 6d |
| CON-LEG101-LR-2000 |  | Installation of Micron Marker Magnetic Tape [Local – 02 ] | 4d | 2026-08-24 | 2026-08-27 | CON-LEG101-LR-1880 | 6d |
| CON-LEG101-LR-2110 |  | Backfilling to Subgrade Elevation [Local – 02 ] | 19d | 2026-08-29 | 2026-09-19 | CON-LEG101-LR-2000, CON-LEG101-EN-3440 | 6d |
|  | 1 | **Valves/Chamber** |  | 2026-07-29 | 2027-01-14 |  |  |
| CON-LEG101-LR-2710 |  | Installation of Wash out chambers [Local – 02 ] | 21d | 2026-07-29 | 2026-08-22 | CON-LEG101-LR-1560, CON-LEG101-PR-1970 | 13d |
| CON-LEG101-LR-2220 |  | Installation of Gate (Sluice) valves (Direct buried) [Local – 02 ] | 13d | 2026-08-23 | 2026-09-06 | CON-LEG101-LR-2710, CON-LEG101-LR-1560, CON-LEG101-PR-1970 | 15d |
| CON-LEG101-LR-2410 |  | Installation of Wash out Valves [Local – 02 ] | 15d | 2026-08-23 | 2026-09-08 | CON-LEG101-LR-2710, CON-LEG101-PR-1970 | 13d |
| CON-LEG101-LR-2490 |  | Installation of Fire Hydrant [Local – 02 ] | 10d | 2027-01-04 | 2027-01-14 | CON-LEG101-LR-2410, CON-LEG101-PR-2470, CON-LEG101-LR-2480 SS | 8d |
|  | 6 | **Public Water Utility Distribution** |  | 2026-07-01 | 2026-10-06 |  |  |
|  | 2 | **Pipe Work** |  | 2026-07-01 | 2026-09-14 |  |  |
| CON-LEG101-LR-10070 |  | Excavation for Public Water Utility Distribution Piping [Local – 02 ] | 12d | 2026-07-01 | 2026-07-14 | CON-LEG101-LR-4230, CON-LEG101-LR-11170, CON-LEG101-LR-3440, CON-LEG101-LR-3530, CON-LEG101-LR-1330, CON-LEG101-EN-1690, CON-LEG101-EN-1700, CON-LEG101-EN-1710, CON-LEG101-EN-3440 | 10d |
| CON-LEG101-LR-10170 |  | Granular bedding for Public Water Utility Distribution Piping [Local – 02 ] | 9d | 2026-07-15 | 2026-07-25 | CON-LEG101-LR-10070 | 10d |
| CON-LEG101-LR-10270 |  | Installation of Pipe for Public Water Utility Distribution Piping [Local – 02 ] | 13d | 2026-07-26 | 2026-08-09 | CON-LEG101-PR-4010, CON-LEG101-LR-10170, CON-LEG101-PR-1660 | 10d |
| CON-LEG101-LR-10370 |  | Testing for Public Water Utility Distribution Piping [Local – 02 ] | 9d | 2026-08-10 | 2026-08-19 | CON-LEG101-LR-10270 | 10d |
| CON-LEG101-LR-10470 |  | Concrete encasement, pipe dia 110 mm [Local – 02 ] | 2d | 2026-08-20 | 2026-08-22 | CON-LEG101-LR-10370, CON-LEG101-EN-3450, CON-LEG101-PR-1430 | 10d |
| CON-LEG101-LR-10570 |  | Granular Surround for Public Water Utility Distribution Piping [Local – 02 ] | 9d | 2026-08-23 | 2026-09-01 | CON-LEG101-LR-10470, CON-LEG101-EN-3450 | 10d |
| CON-LEG101-LR-10670 |  | Installation of Micron Marker Magnetic Tape [Local – 02 ] | 3d | 2026-09-02 | 2026-09-05 | CON-LEG101-LR-10570 | 10d |
| CON-LEG101-LR-10770 |  | Backfilling to Subgrade Elevation [Local – 02 ] | 8d | 2026-09-06 | 2026-09-14 | CON-LEG101-LR-10670, CON-LEG101-EN-3440 | 10d |
|  | 1 | **Valves/Chamber** |  | 2026-08-10 | 2026-10-06 |  |  |
| CON-LEG101-LR-15070 |  | Installation of Wash out chambers [Local – 02 ] | 20d | 2026-08-10 | 2026-09-01 | CON-LEG101-LR-10270 | 16d |
| CON-LEG101-LR-15080 |  | Installation of Air Valve chambers [Local – 02 ] | 20d | 2026-09-02 | 2026-09-26 | CON-LEG101-LR-15070 | 16d |
| CON-LEG101-LR-15090 |  | Installation of Wash-out Valves [Local – 02 ] | 8d | 2026-09-09 | 2026-09-17 | CON-LEG101-LR-15070, CON-LEG101-LR-2410, CON-LEG101-LR-2220 | 13d |
| CON-LEG101-LR-15100 |  | Installation of Air Valves [Local – 02 ] | 8d | 2026-09-19 | 2026-09-28 | CON-LEG101-LR-15090 | 14d |
| CON-LEG101-LR-1030 |  | Installation of Gate (Sluice) valves (Direct buried) [Local – 02 ] | 7d | 2026-09-29 | 2026-10-06 | CON-LEG101-LR-15100, CON-LEG101-LR-15080, CON-LEG101-LR-10270, CON-LEG101-PR-1960 | 14d |
|  | 1 | **Electrical Works** |  | 2026-09-20 | 2027-03-06 |  |  |
|  | 3 | **Low Voltage** |  | 2026-09-20 | 2027-03-06 |  |  |
| CON-LEG101-LR-7810 |  | Excavation works for Low Voltage Cables [Local – 02 ] | 16d | 2026-09-20 | 2026-10-08 | CON-LEG101-LR-11170, CON-LEG101-LR-4230, CON-LEG101-LR-3440, CON-LEG101-LR-3530, CON-LEG101-LR-2110, CON-LEG101-LR-10770, CON-LEG101-LR-6910, CON-LEG101-EN-1680, CON-LEG101-EN-3440 | 6d |
| CON-LEG101-LR-8010 |  | Installation of Low Voltage Cables Duct Banks [Local – 02 ] | 6d | 2026-10-10 | 2026-10-15 | CON-LEG101-LR-7810, CON-LEG101-PR-1320, CON-LEG101-LR-1030 | 12d |
| CON-LEG101-LR-7910 |  | Installation of Low Voltage Cables [Local – 02 ] | 14d | 2026-10-17 | 2026-11-01 | CON-LEG101-LR-8010, CON-LEG101-LR-7810, CON-LEG101-PR-1900 | 12d |
| CON-LEG101-LR-8490 |  | Installation of Low Voltage Distribution Panel [Local – 02 ] | 10d | 2026-11-07 | 2026-11-17 | CON-LEG101-LR-7910, CON-LEG101-LR-8010, CON-LEG101-PR-2550 | 8d |
| CON-LEG101-LR-8540 |  | Installation of KWH Meters Walls [Local – 02 ] | 7d | 2027-02-24 | 2027-03-03 | CON-LEG101-LR-8490, CON-LEG101-PR-1930, CON-LEG101-LR-9960 | 30d |
| CON-LEG101-LR-8790 |  | Installation of Earthing System [Local – 02 ] | 2d | 2027-03-04 | 2027-03-06 | CON-LEG101-LR-8540, CON-LEG101-PR-1320, CON-LEG101-PR-1480, CON-LEG101-PR-1310 | 30d |
|  | 10 | **Telecommunications** |  | 2026-10-10 | 2027-01-10 |  |  |
| CON-LEG101-LR-8860 |  | Installation of Sand and soil encased duct banks for primary network [Local – 02 ] | 18d | 2026-10-10 | 2026-10-29 | CON-LEG101-LR-7810, CON-LEG101-EN-3280, CON-LEG101-EN-3440 | 6d |
| CON-LEG101-LR-8960 |  | Installation of Concrete encased duct banks for primary network [Local – 02 ] | 8d | 2026-10-31 | 2026-11-08 | CON-LEG101-PR-3180, CON-LEG101-PR-4020, CON-LEG101-LR-8860, CON-LEG101-PR-1430 | 6d |
| CON-LEG101-LR-9060 |  | Installation of Sand encased duct banks for secondary network [Local – 02 ] | 10d | 2026-11-09 | 2026-11-19 | CON-LEG101-LR-8960, CON-LEG101-EN-3440 | 6d |
| CON-LEG101-LR-9160 |  | Installation of Sand and soil encased duct banks, for combined network of primary and secondary [Local – 02 ] | 16d | 2026-11-21 | 2026-12-08 | CON-LEG101-LR-9060, CON-LEG101-EN-3440, CON-LEG101-LR-8490 | 6d |
| CON-LEG101-LR-9260 |  | Installation of Concrete encased duct banks for for combined network of primary and secondary [Local – 02 ] | 7d | 2026-12-09 | 2026-12-16 | CON-LEG101-PR-3250, CON-LEG101-LR-9160, CON-LEG101-PR-1430 | 6d |
| CON-LEG101-LR-9360 |  | Installation of Reinforced concrete manhole [Local – 02 ] | 21d | 2026-12-17 | 2027-01-10 | CON-LEG101-LR-9260, CON-LEG101-PR-3260 | 6d |
|  | 11 | **CCTV feeding system and GSM** |  | 2026-10-31 | 2027-01-09 |  |  |
| CON-LEG101-LR-8580 |  | Excavation works for Low Voltage Cables for CCTV feeding system and GSM [Local – 02 ] | 10d | 2026-10-31 | 2026-11-10 | CON-LEG101-LR-8860, CON-LEG101-EN-3290, CON-LEG101-EN-3440 | 7d |
| CON-LEG101-LR-8650 |  | Installation of Low Voltage Cables for CCTV feeding system and GSM [Local – 02 ] | 7d | 2026-11-11 | 2026-11-18 | CON-LEG101-LR-8580, CON-LEG101-PR-1900 | 7d |
| CON-LEG101-LR-9470 |  | Installation of 8POE ports Industrial Switches for remote poles [Local – 02 ] | 7d | 2026-11-19 | 2026-11-26 | CON-LEG101-LR-8650, CON-LEG101-PR-3410 | 7d |
| CON-LEG101-LR-9570 |  | Installation of Server [Local – 02 ] | 7d | 2026-11-28 | 2026-12-05 | CON-LEG101-LR-9470, CON-LEG101-PR-3530 | 7d |
| CON-LEG101-LR-9640 |  | Installation of IP Outdoor CCTV POE Camera,5 MP, Metal Housing [Local – 02 ] | 7d | 2026-12-06 | 2026-12-13 | CON-LEG101-LR-9570, CON-LEG101-PR-3610 | 7d |
| CON-LEG101-LR-9720 |  | Installation of Outdoor PTZ IP66 [Local – 02 ] | 2d | 2026-12-14 | 2026-12-15 | CON-LEG101-LR-9640, CON-LEG101-PR-3650 | 7d |
| CON-LEG101-LR-9800 |  | Installation of LED Screen 43" (24/7 operation) with Ethernet decoders [Local – 02 ] | 7d | 2026-12-16 | 2026-12-23 | CON-LEG101-PR-3950, CON-LEG101-LR-9720, CON-LEG101-PR-3290 | 7d |
| CON-LEG101-LR-9890 |  | Installation of 25 Meters pole for CCTV Cameras [Local – 02 ] | 7d | 2026-12-24 | 2026-12-31 | CON-LEG101-LR-9800, CON-LEG101-PR-3870 | 7d |
| CON-LEG101-LR-9970 |  | Installation of Short Range wireless point to point wireless bridge [Local – 02 ] | 7d | 2027-01-02 | 2027-01-09 | CON-LEG101-LR-9890, CON-LEG101-PR-3910 | 7d |
|  | 12 | **Earthing System** |  | 2027-01-18 | 2027-01-24 |  |  |
| CON-LEG101-LR-8310 |  | Installation of Earthing for Distribution panels,SL feeder pillars, KWH, Unit substations and RMU [Local – 02 ] | 6d | 2027-01-18 | 2027-01-24 | CON-LEG101-LR-9360, CON-LEG101-LR-7510, CON-LEG101-LR-7430, CON-LEG101-LR-8460, CON-LEG101-LR-8110, CON-LEG101-PR-1480, CON-LEG101-LR-9970, CON-LEG101-PR-1310, CON-LEG101-LR-8360 SS | 0d |
|  | 9 | **Road Lighting** |  | 2026-12-09 | 2027-01-23 |  |  |
| CON-LEG101-LR-8110 |  | Installation of Lighting poles [Local – 02 ] | 7d | 2026-12-09 | 2026-12-16 | CON-LEG101-PR-1950, CON-LEG101-LR-7810, CON-LEG101-LR-8100 SS, CON-LEG101-PR-1910 | 0d |
| CON-LEG101-LR-7430 |  | Installation of Unit Substation Including concrete foundations and fencing [Local – 02 ] | 7d | 2026-12-17 | 2026-12-24 | CON-LEG101-LR-8110, CON-LEG101-EN-3310, CON-LEG101-EN-3320, CON-LEG101-EN-3330, CON-LEG101-EN-3360, CON-LEG101-PR-1890 | 0d |
| CON-LEG101-LR-8210 |  | Installation of Street Lighting Luminaire [Local – 02 ] | 7d | 2026-12-17 | 2026-12-24 | CON-LEG101-LR-8110, CON-LEG101-PR-1920 | 0d |
| CON-LEG101-LR-7510 |  | Installation of Ring Main Unit RMU [Local – 02 ] | 13d | 2026-12-26 | 2027-01-09 | CON-LEG101-LR-8110, CON-LEG101-LR-7430, CON-LEG101-PR-2510, CON-LEG101-LR-8210 | 0d |
| CON-LEG101-LR-8460 |  | Installation of Street Lighting feeder pillars / Lighting panels [Local – 02 ] | 7d | 2027-01-10 | 2027-01-17 | CON-LEG101-LR-7510, CON-LEG101-PR-1940, CON-LEG101-PR-2550 | 0d |
| CON-LEG101-LR-8360 |  | Installation of Earthing for Streetlighting feeders for every end pole circuits. [Local – 02 ] | 5d | 2027-01-18 | 2027-01-23 | CON-LEG101-LR-7510, CON-LEG101-LR-7430, CON-LEG101-LR-8460, CON-LEG101-PR-1480, CON-LEG101-LR-8210, CON-LEG101-PR-1310, CON-LEG101-LR-8350 | 0d |
|  | 3 | **Local – 03** |  | 2026-06-20 | 2027-03-07 |  |  |
|  | 5 | **TSE Network** |  | 2026-06-20 | 2027-01-20 |  |  |
|  | 2 | **Pipe Work** |  | 2026-06-20 | 2026-08-18 |  |  |
| CON-LEG101-LR-1340 |  | Excavation for TSE Network [Local – 03 ] | 6d | 2026-06-20 | 2026-06-25 | CON-LEG101-LR-11270, CON-LEG101-LR-4240, CON-LEG101-LR-3530, CON-LEG101-LR-3440, CON-LEG101-LR-3620, CON-LEG101-EN-1720, CON-LEG101-EN-1730, CON-LEG101-EN-1740, CON-LEG101-EN-1810 | 11d |
| CON-LEG101-LR-1460 |  | Granular bedding for TSE Network [Local – 03 ] | 7d | 2026-06-27 | 2026-07-04 | CON-LEG101-LR-1340 | 11d |
| CON-LEG101-LR-1570 |  | Installation of Pipe for TSE Network [Local – 03 ] | 13d | 2026-07-05 | 2026-07-19 | CON-LEG101-PR-2590, CON-LEG101-LR-1460, CON-LEG101-PR-1690 | 11d |
| CON-LEG101-LR-1680 |  | Testing for TSE Network [Local – 03 ] | 7d | 2026-07-20 | 2026-07-27 | CON-LEG101-LR-1570 | 11d |
| CON-LEG101-LR-1790 |  | Concrete encasement, pipe dia 110 mm [Local – 03 ] | 3d | 2026-07-28 | 2026-07-30 | CON-LEG101-LR-1680, CON-LEG101-EN-3450, CON-LEG101-PR-1430 | 11d |

| ID | WBS | Task | Duration | Start | Finish | Predecessors | Total float |
| --- | --- | --- | --- | --- | --- | --- | --- |
| CON-LEG101-LR-1890 |  | Granular Surround for TSE Network [Local – 03 ] | 7d | 2026-08-01 | 2026-08-08 | CON-LEG101-LR-1790, CON-LEG101-EN-3450 | 11d |
| CON-LEG101-LR-2010 |  | Installation of Micron Marker Magnetic Tape [Local – 03 ] | 3d | 2026-08-09 | 2026-08-11 | CON-LEG101-LR-1890 | 14d |
| CON-LEG101-LR-2120 |  | Backfilling to Subgrade Elevation [Local – 03 ] | 6d | 2026-08-12 | 2026-08-18 | CON-LEG101-LR-2010, CON-LEG101-EN-3440 | 14d |
|  | 1 | **Valves/Chamber** |  | 2026-09-19 | 2027-01-20 |  |  |
| CON-LEG101-LR-2640 |  | Installation of Wash out chambers [Local – 03 ] | 21d | 2026-09-19 | 2026-10-13 | CON-LEG101-LR-1570, CON-LEG101-PR-1970, CON-LEG101-LR-2710, CON-LEG101-LR-15090 | 13d |
| CON-LEG101-LR-2720 |  | Installation of Air Valve chambers [Local – 03 ] | 21d | 2026-10-14 | 2026-11-07 | CON-LEG101-LR-2640, CON-LEG101-PR-1970 | 13d |
| CON-LEG101-LR-2230 |  | Installation of Gate (Sluice) valves (Direct buried) [Local – 03 ] | 15d | 2026-11-08 | 2026-11-24 | CON-LEG101-LR-2640, CON-LEG101-LR-2720, CON-LEG101-LR-1570, CON-LEG101-PR-1970, CON-LEG101-LR-1030 | 22d |
| CON-LEG101-LR-2340 |  | Installation of Wash-out Valves [Local – 03 ] | 15d | 2026-11-25 | 2026-12-12 | CON-LEG101-LR-2230, CON-LEG101-PR-1970 | 22d |
| CON-LEG101-LR-2420 |  | Installation of Air Valves [Local – 03 ] | 15d | 2026-12-13 | 2026-12-29 | CON-LEG101-LR-2340, CON-LEG101-PR-1970 | 22d |
| CON-LEG101-LR-2500 |  | Installation of Fire Hydrant [Local – 03 ] | 15d | 2027-01-04 | 2027-01-20 | CON-LEG101-LR-2120, CON-LEG101-LR-2420, CON-LEG101-PR-2470, CON-LEG101-LR-2490 SS | 18d |
|  | 6 | **Public Water Utility Distribution** |  | 2026-08-09 | 2026-12-19 |  |  |
|  | 2 | **Pipe Work** |  | 2026-08-09 | 2026-10-12 |  |  |
| CON-LEG101-LR-10080 |  | Excavation for Public Water Utility Distribution Piping [Local – 03 ] | 10d | 2026-08-09 | 2026-08-19 | CON-LEG101-LR-3530, CON-LEG101-LR-3440, CON-LEG101-LR-1340, CON-LEG101-EN-1690, CON-LEG101-EN-1700, CON-LEG101-EN-1710, CON-LEG101-EN-3440, CON-LEG101-LR-1890 | 11d |
| CON-LEG101-LR-10180 |  | Granular bedding for Public Water Utility Distribution Piping [Local – 03 ] | 7d | 2026-08-20 | 2026-08-27 | CON-LEG101-LR-10080 | 11d |
| CON-LEG101-LR-10280 |  | Installation of Pipe for Public Water Utility Distribution Piping [Local – 03 ] | 12d | 2026-08-29 | 2026-09-10 | CON-LEG101-PR-4010, CON-LEG101-LR-10180, CON-LEG101-PR-1660 | 11d |
| CON-LEG101-LR-10380 |  | Testing for Public Water Utility Distribution Piping [Local – 03 ] | 7d | 2026-09-12 | 2026-09-19 | CON-LEG101-LR-10280 | 11d |
| CON-LEG101-LR-10480 |  | Concrete encasement, pipe dia 110 mm [Local – 03 ] | 3d | 2026-09-20 | 2026-09-22 | CON-LEG101-LR-10380, CON-LEG101-EN-3450, CON-LEG101-PR-1430 | 11d |
| CON-LEG101-LR-10580 |  | Granular Surround for Public Water Utility Distribution Piping [Local – 03 ] | 7d | 2026-09-24 | 2026-10-01 | CON-LEG101-LR-10480, CON-LEG101-EN-3450 | 11d |
| CON-LEG101-LR-10680 |  | Installation of Micron Marker Magnetic Tape [Local – 03 ] | 3d | 2026-10-03 | 2026-10-05 | CON-LEG101-LR-10580 | 11d |
| CON-LEG101-LR-10780 |  | Backfilling to Subgrade Elevation [Local – 03 ] | 6d | 2026-10-06 | 2026-10-12 | CON-LEG101-LR-10680, CON-LEG101-EN-3440 | 11d |
|  | 1 | **Valves/Chamber** |  | 2026-11-08 | 2026-12-19 |  |  |
| CON-LEG101-LR-15110 |  | Installation of Air Valve chambers [Local – 03 ] | 20d | 2026-11-08 | 2026-11-30 | CON-LEG101-LR-10280, CON-LEG101-LR-2720, CON-LEG101-LR-10780 | 13d |
| CON-LEG101-LR-15120 |  | Installation of Air Valves [Local – 03 ] | 8d | 2026-12-01 | 2026-12-09 | CON-LEG101-LR-15110 | 13d |
| CON-LEG101-LR-1040 |  | Installation of Gate (Sluice) valves (Direct buried) [Local – 03 ] | 8d | 2026-12-10 | 2026-12-19 | CON-LEG101-LR-10780, CON-LEG101-LR-15110, CON-LEG101-LR-15120, CON-LEG101-LR-10280, CON-LEG101-PR-1960 | 13d |
|  | 1 | **Electrical Works** |  | 2026-10-13 | 2026-11-24 |  |  |
|  | 3 | **Low Voltage** |  | 2026-10-13 | 2026-11-24 |  |  |
| CON-LEG101-LR-7820 |  | Excavation works for Low Voltage Cables [Local – 03 ] | 12d | 2026-10-13 | 2026-10-26 | CON-LEG101-LR-11270, CON-LEG101-LR-4240, CON-LEG101-LR-2120, CON-LEG101-LR-10780, CON-LEG101-LR-6920, CON-LEG101-EN-1680, CON-LEG101-EN-3440 | 11d |
| CON-LEG101-LR-8020 |  | Installation of Low Voltage Cables Duct Banks [Local – 03 ] | 10d | 2026-10-27 | 2026-11-07 | CON-LEG101-LR-7820, CON-LEG101-PR-1320 | 11d |
| CON-LEG101-LR-7920 |  | Installation of Low Voltage Cables [Local – 03 ] | 12d | 2026-11-08 | 2026-11-21 | CON-LEG101-LR-8020, CON-LEG101-LR-7820, CON-LEG101-PR-1900 | 11d |
| CON-LEG101-LR-8800 |  | Installation of Earthing System [Local – 03 ] | 3d | 2026-11-22 | 2026-11-24 | CON-LEG101-LR-8020, CON-LEG101-PR-1320, CON-LEG101-LR-7920, CON-LEG101-PR-1480, CON-LEG101-PR-1310 | 11d |
|  | 10 | **Telecommunications** |  | 2026-10-27 | 2027-01-28 |  |  |
| CON-LEG101-LR-8870 |  | Installation of Sand and soil encased duct banks for primary network [Local – 03 ] | 17d | 2026-10-27 | 2026-11-15 | CON-LEG101-LR-7820, CON-LEG101-EN-3280, CON-LEG101-EN-3440 | 19d |
| CON-LEG101-LR-8970 |  | Installation of Concrete encased duct banks for primary network [Local – 03 ] | 6d | 2026-11-25 | 2026-12-01 | CON-LEG101-PR-3180, CON-LEG101-PR-4020, CON-LEG101-LR-8870, CON-LEG101-PR-1430, CON-LEG101-LR-8800 | 11d |
| CON-LEG101-LR-9070 |  | Installation of Sand encased duct banks for secondary network [Local – 03 ] | 7d | 2026-12-02 | 2026-12-09 | CON-LEG101-LR-8970, CON-LEG101-EN-3440 | 11d |
| CON-LEG101-LR-9170 |  | Installation of Sand and soil encased duct banks, for combined network of primary and secondary [Local – 03 ] | 17d | 2026-12-10 | 2026-12-29 | CON-LEG101-LR-9070, CON-LEG101-EN-3440 | 11d |
| CON-LEG101-LR-9270 |  | Installation of Concrete encased duct banks for for combined network of primary and secondary [Local – 03 ] | 5d | 2026-12-30 | 2027-01-04 | CON-LEG101-PR-3250, CON-LEG101-LR-9170, CON-LEG101-PR-1430 | 11d |
| CON-LEG101-LR-9370 |  | Installation of Reinforced concrete manhole [Local – 03 ] | 21d | 2027-01-05 | 2027-01-28 | CON-LEG101-LR-9270, CON-LEG101-PR-3260 | 11d |
|  | 11 | **CCTV feeding system and GSM** |  | 2026-12-10 | 2027-02-27 |  |  |
| CON-LEG101-LR-8590 |  | Excavation works for Low Voltage Cables for CCTV feeding system and GSM [Local – 03 ] | 10d | 2026-12-10 | 2026-12-21 | CON-LEG101-LR-8870, CON-LEG101-EN-3290, CON-LEG101-EN-3440, CON-LEG101-LR-9070 | 21d |
| CON-LEG101-LR-8660 |  | Installation of Low Voltage Cables for CCTV feeding system and GSM [Local – 03 ] | 12d | 2026-12-22 | 2027-01-04 | CON-LEG101-LR-8590, CON-LEG101-PR-1900 | 21d |
| CON-LEG101-LR-9480 |  | Installation of 8POE ports Industrial Switches for remote poles [Local – 03 ] | 8d | 2027-01-05 | 2027-01-13 | CON-LEG101-LR-8660, CON-LEG101-PR-3410 | 21d |
| CON-LEG101-LR-9650 |  | Installation of IP Outdoor CCTV POE Camera,5 MP, Metal Housing [Local – 03 ] | 5d | 2027-01-14 | 2027-01-19 | CON-LEG101-LR-9480, CON-LEG101-PR-3610 | 21d |
| CON-LEG101-LR-9730 |  | Installation of Outdoor PTZ IP66 [Local – 03 ] | 8d | 2027-01-20 | 2027-01-28 | CON-LEG101-LR-9650, CON-LEG101-PR-3650 | 21d |
| CON-LEG101-LR-9900 |  | Installation of 25 Meters pole for CCTV Cameras [Local – 03 ] | 10d | 2027-01-30 | 2027-02-14 | CON-LEG101-LR-9730, CON-LEG101-PR-3870 | 21d |
| CON-LEG101-LR-9980 |  | Installation of Short Range wireless point to point wireless bridge [Local – 03 ] | 10d | 2027-02-15 | 2027-02-27 | CON-LEG101-LR-9900, CON-LEG101-PR-3910 | 21d |
|  | 12 | **Earthing System** |  | 2027-02-28 | 2027-03-07 |  |  |
| CON-LEG101-LR-15170 |  | Installation of Earthing for Distribution panels,SL feeder pillars, KWH, Unit substations and RMU [Local – 03 ] | 7d | 2027-02-28 | 2027-03-07 | CON-LEG101-LR-7520, CON-LEG101-LR-7440, CON-LEG101-LR-9980, CON-LEG101-LR-9900, CON-LEG101-LR-9730, CON-LEG101-LR-8370 | 21d |
|  | 9 | **Road Lighting** |  | 2026-12-17 | 2027-02-21 |  |  |
| CON-LEG101-LR-8120 |  | Installation of Lighting poles [Local – 03 ] | 15d | 2026-12-17 | 2027-01-03 | CON-LEG101-PR-1950, CON-LEG101-LR-7820, CON-LEG101-LR-8110, CON-LEG101-PR-1910 | 19d |
| CON-LEG101-LR-8220 |  | Installation of Street Lighting Luminaire [Local – 03 ] | 7d | 2027-01-04 | 2027-01-11 | CON-LEG101-LR-8120, CON-LEG101-PR-1920 | 25d |
| CON-LEG101-LR-7440 |  | Installation of Unit Substation Including concrete foundations and fencing [Local – 03 ] | 10d | 2027-01-12 | 2027-01-23 | CON-LEG101-LR-8120, CON-LEG101-LR-8590, CON-LEG101-EN-3310, CON-LEG101-EN-3320, CON-LEG101-EN-3330, CON-LEG101-EN-3360, CON-LEG101-PR-1890, CON-LEG101-LR-8220 | 25d |
| CON-LEG101-LR-7520 |  | Installation of Ring Main Unit RMU [Local – 03 ] | 15d | 2027-01-24 | 2027-02-14 | CON-LEG101-LR-7440, CON-LEG101-PR-2510 | 25d |
| CON-LEG101-LR-8370 |  | Installation of Earthing for Streetlighting feeders for every end pole circuits. [Local – 03 ] | 6d | 2027-02-15 | 2027-02-21 | CON-LEG101-LR-7520, CON-LEG101-LR-7440, CON-LEG101-PR-1480, CON-LEG101-LR-8220, CON-LEG101-PR-1310 | 25d |
|  | 4 | **Local – 04** |  | 2026-08-20 | 2027-03-18 |  |  |
|  | 5 | **TSE Network** |  | 2026-08-20 | 2027-02-25 |  |  |
|  | 2 | **Pipe Work** |  | 2026-08-20 | 2026-10-29 |  |  |
| CON-LEG101-LR-1350 |  | Excavation for TSE Network [Local – 04 ] | 12d | 2026-08-20 | 2026-09-02 | CON-LEG101-LR-3450, CON-LEG101-LR-3540, CON-LEG101-LR-11380, CON-LEG101-LR-4250, CON-LEG101-LR-2820, CON-LEG101-EN-1720, CON-LEG101-EN-1730, CON-LEG101-EN-1740, CON-LEG101-EN-1810 | 13d |
| CON-LEG101-LR-1470 |  | Granular bedding for TSE Network [Local – 04 ] | 6d | 2026-09-03 | 2026-09-09 | CON-LEG101-LR-1350 | 13d |
| CON-LEG101-LR-1580 |  | Installation of Pipe for TSE Network [Local – 04 ] | 12d | 2026-09-10 | 2026-09-24 | CON-LEG101-PR-2590, CON-LEG101-LR-1470, CON-LEG101-PR-1690 | 13d |
| CON-LEG101-LR-1690 |  | Testing for TSE Network [Local – 04 ] | 6d | 2026-09-26 | 2026-10-01 | CON-LEG101-LR-1580 | 13d |
| CON-LEG101-LR-1810 |  | Concrete encasement, pipe dia 110 mm [Local – 04 ] | 3d | 2026-10-03 | 2026-10-05 | CON-LEG101-LR-1690, CON-LEG101-EN-3450, CON-LEG101-PR-1430 | 13d |
| CON-LEG101-LR-1910 |  | Granular Surround for TSE Network [Local – 04 ] | 6d | 2026-10-06 | 2026-10-12 | CON-LEG101-LR-1810, CON-LEG101-EN-3450 | 13d |
| CON-LEG101-LR-2020 |  | Installation of Micron Marker Magnetic Tape [Local – 04 ] | 3d | 2026-10-13 | 2026-10-15 | CON-LEG101-LR-1910 | 13d |
| CON-LEG101-LR-2130 |  | Backfilling to Subgrade Elevation [Local – 04 ] | 12d | 2026-10-17 | 2026-10-29 | CON-LEG101-LR-2020, CON-LEG101-EN-3440 | 13d |
|  | 1 | **Valves/Chamber** |  | 2026-10-17 | 2027-02-25 |  |  |
| CON-LEG101-LR-2730 |  | Installation of Air Valve chambers [Local – 04 ] | 21d | 2026-10-17 | 2026-11-09 | CON-LEG101-LR-1580, CON-LEG101-PR-1970, CON-LEG101-LR-2020 | 16d |
| CON-LEG101-LR-15060 |  | Installation of Wash-out Valve chambers [Local – 04 ] | 21d | 2026-11-10 | 2026-12-03 | CON-LEG101-LR-2730 | 16d |
| CON-LEG101-LR-2240 |  | Installation of Gate (Sluice) valves (Direct buried) [Local – 04 ] | 9d | 2026-12-20 | 2026-12-29 | CON-LEG101-LR-2730, CON-LEG101-LR-1580, CON-LEG101-PR-1970, CON-LEG101-LR-1040 | 13d |
| CON-LEG101-LR-2350 |  | Installation of Wash-out Valves [Local – 04 ] | 15d | 2026-12-30 | 2027-01-16 | CON-LEG101-LR-1580, CON-LEG101-LR-15060, CON-LEG101-LR-2240, CON-LEG101-PR-1970 | 13d |
| CON-LEG101-LR-2430 |  | Installation of Air Valves [Local – 04 ] | 15d | 2027-01-17 | 2027-02-02 | CON-LEG101-LR-2730, CON-LEG101-LR-2350, CON-LEG101-PR-1970, CON-LEG101-LR-2420 | 13d |

| ID | WBS | Task | Duration | Start | Finish | Predecessors | Total float |
| --- | --- | --- | --- | --- | --- | --- | --- |
| CON-LEG101-LR-2510 |  | Installation of Fire Hydrant [Local – 04 ] | 15d | 2027-02-03 | 2027-02-25 | CON-LEG101-LR-2130, CON-LEG101-LR-2430, CON-LEG101-PR-2470 | 13d |
|  | 6 | **Public Water Utility Distribution** |  | 2026-09-03 | 2027-01-10 |  |  |
|  | 2 | **Pipe Work** |  | 2026-09-03 | 2026-10-26 |  |  |
| CON-LEG101-LR-10090 |  | Excavation for Public Water Utility Distribution Piping [Local – 04 ] | 10d | 2026-09-03 | 2026-09-14 | CON-LEG101-LR-1350, CON-LEG101-EN-1690, CON-LEG101-EN-1700, CON-LEG101-EN-1710, CON-LEG101-EN-3440 | 16d |
| CON-LEG101-LR-10190 |  | Granular bedding for Public Water Utility Distribution Piping [Local – 04 ] | 5d | 2026-09-15 | 2026-09-20 | CON-LEG101-LR-10090 | 16d |
| CON-LEG101-LR-10290 |  | Installation of Pipe for Public Water Utility Distribution Piping [Local – 04 ] | 10d | 2026-09-21 | 2026-10-03 | CON-LEG101-PR-4010, CON-LEG101-LR-10190, CON-LEG101-PR-1660 | 16d |
| CON-LEG101-LR-10390 |  | Testing for Public Water Utility Distribution Piping [Local – 04 ] | 5d | 2026-10-04 | 2026-10-08 | CON-LEG101-LR-10290 | 16d |
| CON-LEG101-LR-10490 |  | Concrete encasement, pipe dia 110 mm [Local – 04 ] | 3d | 2026-10-10 | 2026-10-12 | CON-LEG101-LR-10390, CON-LEG101-EN-3450, CON-LEG101-PR-1430 | 16d |
| CON-LEG101-LR-10590 |  | Granular Surround for Public Water Utility Distribution Piping [Local – 04 ] | 5d | 2026-10-13 | 2026-10-18 | CON-LEG101-LR-10490, CON-LEG101-EN-3450 | 16d |
| CON-LEG101-LR-10690 |  | Installation of Micron Marker Magnetic Tape [Local – 04 ] | 3d | 2026-10-19 | 2026-10-21 | CON-LEG101-LR-10590 | 16d |
| CON-LEG101-LR-10790 |  | Backfilling to Subgrade Elevation [Local – 04 ] | 4d | 2026-10-22 | 2026-10-26 | CON-LEG101-LR-10690, CON-LEG101-EN-3440 | 16d |
|  | 1 | **Valves/Chamber** |  | 2026-12-05 | 2027-01-10 |  |  |
| CON-LEG101-LR-1280 |  | Installation of Air Valve chambers [Local – 04 ] | 20d | 2026-12-05 | 2026-12-27 | CON-LEG101-LR-10290, CON-LEG101-PR-1960, CON-LEG101-LR-15060 | 16d |
| CON-LEG101-LR-1050 |  | Installation of Gate (Sluice) valves (Direct buried) [Local – 04 ] | 6d | 2026-12-28 | 2027-01-03 | CON-LEG101-LR-10790, CON-LEG101-LR-1280, CON-LEG101-LR-10290, CON-LEG101-PR-1960 | 16d |
| CON-LEG101-LR-1180 |  | Installation of Air Valves [Local – 04 ] | 6d | 2027-01-04 | 2027-01-10 | CON-LEG101-LR-1280, CON-LEG101-LR-1050, CON-LEG101-PR-1960 | 16d |
|  | 8 | **Electrical Works** |  | 2026-10-31 | 2026-12-14 |  |  |
|  | 3 | **Low Voltage** |  | 2026-10-31 | 2026-12-14 |  |  |
| CON-LEG101-LR-7830 |  | Excavation works for Low Voltage Cables [Local – 04 ] | 13d | 2026-10-31 | 2026-11-14 | CON-LEG101-LR-4250, CON-LEG101-LR-11380, CON-LEG101-LR-3450, CON-LEG101-LR-3540, CON-LEG101-LR-2130, CON-LEG101-LR-10790, CON-LEG101-LR-6930, CON-LEG101-EN-1680, CON-LEG101-EN-3440 | 13d |
| CON-LEG101-LR-8030 |  | Installation of Low Voltage Cables Duct Banks [Local – 04 ] | 10d | 2026-11-15 | 2026-11-25 | CON-LEG101-LR-7830, CON-LEG101-PR-1320 | 13d |
| CON-LEG101-LR-7930 |  | Installation of Low Voltage Cables [Local – 04 ] | 13d | 2026-11-26 | 2026-12-10 | CON-LEG101-LR-8030, CON-LEG101-LR-7830, CON-LEG101-PR-1900 | 25d |
| CON-LEG101-LR-8810 |  | Installation of Earthing System [Local – 04 ] | 3d | 2026-12-12 | 2026-12-14 | CON-LEG101-LR-8030, CON-LEG101-PR-1320, CON-LEG101-LR-7930, CON-LEG101-PR-1480, CON-LEG101-PR-1310 | 25d |
|  | 10 | **Telecommunications** |  | 2026-11-26 | 2027-02-25 |  |  |
| CON-LEG101-LR-8880 |  | Installation of Sand and soil encased duct banks for primary network [Local – 04 ] | 17d | 2026-11-26 | 2026-12-15 | CON-LEG101-LR-7830, CON-LEG101-EN-3280, CON-LEG101-EN-3440, CON-LEG101-LR-8030 | 13d |
| CON-LEG101-LR-8980 |  | Installation of Concrete encased duct banks for primary network [Local – 04 ] | 6d | 2026-12-16 | 2026-12-22 | CON-LEG101-PR-3180, CON-LEG101-PR-4020, CON-LEG101-LR-8880, CON-LEG101-PR-1430 | 13d |
| CON-LEG101-LR-9080 |  | Installation of Sand encased duct banks for secondary network [Local – 04 ] | 7d | 2026-12-23 | 2026-12-30 | CON-LEG101-LR-8980, CON-LEG101-EN-3440 | 13d |
| CON-LEG101-LR-9180 |  | Installation of Sand and soil encased duct banks, for combined network of primary and secondary [Local – 04 ] | 18d | 2026-12-31 | 2027-01-20 | CON-LEG101-LR-9080, CON-LEG101-EN-3440 | 13d |
| CON-LEG101-LR-9280 |  | Installation of Concrete encased duct banks for for combined network of primary and secondary [Local – 04 ] | 5d | 2027-01-21 | 2027-01-26 | CON-LEG101-PR-3250, CON-LEG101-LR-9180, CON-LEG101-PR-1430 | 13d |
| CON-LEG101-LR-9380 |  | Installation of Reinforced concrete manhole [Local – 04 ] | 21d | 2027-01-27 | 2027-02-25 | CON-LEG101-LR-9280, CON-LEG101-PR-3260 | 13d |
|  | 11 | **CCTV feeding system and GSM** |  | 2026-12-16 | 2027-03-03 |  |  |
| CON-LEG101-LR-8600 |  | Excavation works for Low Voltage Cables for CCTV feeding system and GSM [Local – 04 ] | 12d | 2026-12-16 | 2026-12-29 | CON-LEG101-LR-8880, CON-LEG101-EN-3290, CON-LEG101-EN-3440, CON-LEG101-LR-8810 | 24d |
| CON-LEG101-LR-8670 |  | Installation of Low Voltage Cables for CCTV feeding system and GSM [Local – 04 ] | 13d | 2026-12-30 | 2027-01-13 | CON-LEG101-LR-8600, CON-LEG101-PR-1900 | 24d |
| CON-LEG101-LR-9490 |  | Installation of 8POE ports Industrial Switches for remote poles [Local – 04 ] | 7d | 2027-01-14 | 2027-01-21 | CON-LEG101-LR-8670, CON-LEG101-PR-3410 | 24d |
| CON-LEG101-LR-9660 |  | Installation of IP Outdoor CCTV POE Camera,5 MP, Metal Housing [Local – 04 ] | 8d | 2027-01-23 | 2027-01-31 | CON-LEG101-LR-9490, CON-LEG101-PR-3610 | 24d |
| CON-LEG101-LR-9740 |  | Installation of Outdoor PTZ IP66 [Local – 04 ] | 10d | 2027-02-01 | 2027-02-16 | CON-LEG101-LR-9660, CON-LEG101-PR-3650 | 24d |
| CON-LEG101-LR-9990 |  | Installation of Short Range wireless point to point wireless bridge [Local – 04 ] | 12d | 2027-02-17 | 2027-03-03 | CON-LEG101-LR-9740, CON-LEG101-PR-3910 | 24d |
|  | 12 | **Earthing System** |  | 2027-03-10 | 2027-03-18 |  |  |
| CON-LEG101-LR-15160 |  | Installation of Earthing for Distribution panels,SL feeder pillars, KWH, Unit substations and RMU [Local – 04 ] | 8d | 2027-03-10 | 2027-03-18 | CON-LEG101-LR-7450, CON-LEG101-LR-7530, CON-LEG101-LR-9990, CON-LEG101-LR-9740, CON-LEG101-LR-9660, CON-LEG101-LR-15170, CON-LEG101-LR-8380 | 19d |
|  | 9 | **Road Lighting** |  | 2027-01-04 | 2027-03-09 |  |  |
| CON-LEG101-LR-8130 |  | Installation of Lighting poles [Local – 04 ] | 18d | 2027-01-04 | 2027-01-24 | CON-LEG101-PR-1950, CON-LEG101-LR-7830, CON-LEG101-LR-8120, CON-LEG101-PR-1910 | 19d |
| CON-LEG101-LR-8230 |  | Installation of Street Lighting Luminaire [Local – 04 ] | 6d | 2027-01-25 | 2027-01-31 | CON-LEG101-LR-8130, CON-LEG101-PR-1920 | 19d |
| CON-LEG101-LR-7450 |  | Installation of Unit Substation Including concrete foundations and fencing [Local – 04 ] | 7d | 2027-02-01 | 2027-02-08 | CON-LEG101-LR-8130, CON-LEG101-LR-8600, CON-LEG101-EN-3310, CON-LEG101-EN-3320, CON-LEG101-EN-3330, CON-LEG101-EN-3360, CON-LEG101-PR-1890, CON-LEG101-LR-8230 | 19d |
| CON-LEG101-LR-7530 |  | Installation of Ring Main Unit RMU [Local – 04 ] | 14d | 2027-02-14 | 2027-03-02 | CON-LEG101-LR-8130, CON-LEG101-LR-7450, CON-LEG101-PR-2510 | 19d |
| CON-LEG101-LR-8380 |  | Installation of Earthing for Streetlighting feeders for every end pole circuits. [Local – 04 ] | 6d | 2027-03-03 | 2027-03-09 | CON-LEG101-LR-7450, CON-LEG101-LR-7530, CON-LEG101-PR-1480, CON-LEG101-LR-8230, CON-LEG101-PR-1310 | 19d |
|  | 5 | **Local – 05** |  | 2026-08-30 | 2027-03-18 |  |  |
|  | 5 | **TSE Network** |  | 2026-08-30 | 2027-03-18 |  |  |
|  | 2 | **Pipe Work** |  | 2026-08-30 | 2026-11-29 |  |  |
| CON-LEG101-LR-1370 |  | Excavation for TSE Network [Local – 05 ] | 12d | 2026-08-30 | 2026-09-12 | CON-LEG101-LR-3460, CON-LEG101-LR-3550, CON-LEG101-LR-11470, CON-LEG101-LR-4260, CON-LEG101-LR-2830, CON-LEG101-EN-1720, CON-LEG101-EN-1730, CON-LEG101-EN-1740, CON-LEG101-EN-1810 | 28d |
| CON-LEG101-LR-1480 |  | Granular bedding for TSE Network [Local – 05 ] | 9d | 2026-09-13 | 2026-09-22 | CON-LEG101-LR-1370 | 28d |
| CON-LEG101-LR-1590 |  | Installation of Pipe for TSE Network [Local – 05 ] | 15d | 2026-09-24 | 2026-10-11 | CON-LEG101-PR-2590, CON-LEG101-LR-1480, CON-LEG101-PR-1690 | 28d |
| CON-LEG101-LR-1700 |  | Testing for TSE Network [Local – 05 ] | 9d | 2026-10-12 | 2026-10-21 | CON-LEG101-LR-1590 | 28d |
| CON-LEG101-LR-1820 |  | Concrete encasement, pipe dia 110 mm [Local – 05 ] | 2d | 2026-10-22 | 2026-10-24 | CON-LEG101-LR-1700, CON-LEG101-EN-3450, CON-LEG101-PR-1430 | 28d |
| CON-LEG101-LR-1920 |  | Granular Surround for TSE Network [Local – 05 ] | 9d | 2026-10-25 | 2026-11-03 | CON-LEG101-LR-1820, CON-LEG101-EN-3450 | 28d |
| CON-LEG101-LR-2030 |  | Installation of Micron Marker Magnetic Tape [Local – 05 ] | 4d | 2026-11-04 | 2026-11-08 | CON-LEG101-LR-1920 | 28d |
| CON-LEG101-LR-2140 |  | Backfilling to Subgrade Elevation [Local – 05 ] | 18d | 2026-11-09 | 2026-11-29 | CON-LEG101-LR-2030, CON-LEG101-EN-3440 | 28d |
|  | 1 | **Valves/Chamber** |  | 2026-10-12 | 2027-03-18 |  |  |
| CON-LEG101-LR-2660 |  | Installation of Wash out chambers [Local – 05 ] | 21d | 2026-10-12 | 2026-11-04 | CON-LEG101-LR-1590, CON-LEG101-PR-1970 | 28d |
| CON-LEG101-LR-2740 |  | Installation of Air Valve chambers [Local – 05 ] | 21d | 2026-11-05 | 2026-11-29 | CON-LEG101-LR-1590, CON-LEG101-LR-2660, CON-LEG101-PR-1970 | 28d |
| CON-LEG101-LR-2250 |  | Installation of Gate (Sluice) valves (Direct buried) [Local – 05 ] | 14d | 2027-01-11 | 2027-01-26 | CON-LEG101-LR-2740, CON-LEG101-LR-1590, CON-LEG101-PR-1970, CON-LEG101-LR-1180 | 16d |
| CON-LEG101-LR-2360 |  | Installation of Wash-out Valves [Local – 05 ] | 14d | 2027-01-27 | 2027-02-16 | CON-LEG101-LR-2660, CON-LEG101-LR-2250, CON-LEG101-PR-1970 | 16d |
| CON-LEG101-LR-2440 |  | Installation of Air Valves [Local – 05 ] | 14d | 2027-02-17 | 2027-03-06 | CON-LEG101-LR-2740, CON-LEG101-LR-2360, CON-LEG101-PR-1970 | 16d |
| CON-LEG101-LR-2520 |  | Installation of Fire Hydrant [Local – 05 ] | 11d | 2027-03-07 | 2027-03-18 | CON-LEG101-LR-2140, CON-LEG101-LR-2440, CON-LEG101-PR-2470 | 16d |
|  | 6 | **Public Water Utility Distribution** |  | 2026-11-30 | 2027-03-04 |  |  |
|  | 2 | **Pipe Work** |  | 2026-11-30 | 2027-03-04 |  |  |
| CON-LEG101-LR-10100 |  | Excavation for Public Water Utility Distribution Piping [Local – 05 ] | 13d | 2026-11-30 | 2026-12-14 | CON-LEG101-LR-2140, CON-LEG101-LR-3460, CON-LEG101-LR-4260, CON-LEG101-EN-1690, CON-LEG101-EN-1700, CON-LEG101-EN-1710, CON-LEG101-EN-3440, CON-LEG101-LR-2740 | 28d |
| CON-LEG101-LR-10200 |  | Granular bedding for Public Water Utility Distribution Piping [Local – 05 ] | 10d | 2026-12-15 | 2026-12-26 | CON-LEG101-LR-10100 | 28d |
| CON-LEG101-LR-10300 |  | Installation of Pipe for Public Water Utility Distribution Piping [Local – 05 ] | 14d | 2026-12-27 | 2027-01-11 | CON-LEG101-PR-4010, CON-LEG101-LR-10200, CON-LEG101-PR-1660 | 28d |
| CON-LEG101-LR-10400 |  | Testing for Public Water Utility Distribution Piping [Local – 05 ] | 10d | 2027-01-12 | 2027-01-23 | CON-LEG101-LR-10300 | 28d |
| CON-LEG101-LR-10500 |  | Concrete encasement, pipe dia 110 mm [Local – 05 ] | 7d | 2027-01-24 | 2027-01-31 | CON-LEG101-LR-10400, CON-LEG101-EN-3450, CON-LEG101-PR-1430 | 28d |
| CON-LEG101-LR-10600 |  | Granular Surround for Public Water Utility Distribution Piping [Local – 05 ] | 10d | 2027-02-01 | 2027-02-16 | CON-LEG101-LR-10500, CON-LEG101-EN-3450 | 28d |
| CON-LEG101-LR-10700 |  | Installation of Micron Marker Magnetic Tape [Local – 05 ] | 3d | 2027-02-17 | 2027-02-20 | CON-LEG101-LR-10600 | 28d |

| ID | WBS | Task | Duration | Start | Finish | Predecessors | Total float |
| --- | --- | --- | --- | --- | --- | --- | --- |
| CON-LEG101-LR-10800 |  | Backfilling to Subgrade Elevation [Local – 05 ] | 10d | 2027-02-21 | 2027-03-04 | CON-LEG101-LR-10700, CON-LEG101-EN-3440 | 28d |
|  | 1 | **Valves/Chamber** |  | 2027-01-12 | 2027-03-04 |  |  |
| CON-LEG101-LR-1240 |  | Installation of Wash out chambers [Local – 05 ] | 20d | 2027-01-12 | 2027-02-03 | CON-LEG101-LR-10300, CON-LEG101-PR-1960 | 31d |
| CON-LEG101-LR-1060 |  | Installation of Gate (Sluice) valves (Direct buried) [Local – 05 ] | 10d | 2027-02-04 | 2027-02-20 | CON-LEG101-LR-1240, CON-LEG101-LR-1240 SS, CON-LEG101-LR-10300, CON-LEG101-PR-1960 | 31d |
| CON-LEG101-LR-1140 |  | Installation of Wash-out Valves [Local – 05 ] | 10d | 2027-02-21 | 2027-03-04 | CON-LEG101-LR-1240, CON-LEG101-LR-1060, CON-LEG101-PR-1960 | 31d |
|  | 1 | **Electrical Works** |  | 2026-11-30 | 2027-01-18 |  |  |
|  | 3 | **Low Voltage** |  | 2026-11-30 | 2027-01-18 |  |  |
| CON-LEG101-LR-7840 |  | Excavation works for Low Voltage Cables [Local – 05 ] | 21d | 2026-11-30 | 2026-12-23 | CON-LEG101-LR-4260, CON-LEG101-LR-11470, CON-LEG101-LR-3460, CON-LEG101-LR-3550, CON-LEG101-LR-2140, CON-LEG101-LR-6940, CON-LEG101-EN-1680, CON-LEG101-EN-3440 | 32d |
| CON-LEG101-LR-8040 |  | Installation of Low Voltage Cables Duct Banks [Local – 05 ] | 6d | 2026-12-24 | 2026-12-30 | CON-LEG101-LR-7840, CON-LEG101-PR-1320 | 32d |
| CON-LEG101-LR-7940 |  | Installation of Low Voltage Cables [Local – 05 ] | 14d | 2026-12-31 | 2027-01-16 | CON-LEG101-LR-8040, CON-LEG101-LR-7840, CON-LEG101-PR-1900 | 32d |
| CON-LEG101-LR-8820 |  | Installation of Earthing System [Local – 05 ] | 2d | 2027-01-17 | 2027-01-18 | CON-LEG101-LR-8040, CON-LEG101-PR-1320, CON-LEG101-LR-7940, CON-LEG101-PR-1310 | 32d |
|  | 10 | **Telecommunications** |  | 2026-11-30 | 2027-01-30 |  |  |
| CON-LEG101-LR-8890 |  | Installation of Sand and soil encased duct banks for primary network [Local – 05 ] | 10d | 2026-11-30 | 2026-12-10 | CON-LEG101-LR-7840 SS, CON-LEG101-EN-3280, CON-LEG101-EN-3440 | 32d |
| CON-LEG101-LR-8990 |  | Installation of Concrete encased duct banks for primary network [Local – 05 ] | 8d | 2026-12-12 | 2026-12-20 | CON-LEG101-PR-3180, CON-LEG101-PR-4020, CON-LEG101-LR-8890, CON-LEG101-PR-1430 | 32d |
| CON-LEG101-LR-9090 |  | Installation of Sand encased duct banks for secondary network [Local – 05 ] | 8d | 2026-12-21 | 2026-12-29 | CON-LEG101-LR-8990, CON-LEG101-EN-3440 | 32d |
| CON-LEG101-LR-9190 |  | Installation of Sand and soil encased duct banks, for combined network of primary and secondary [Local – 05 ] | 10d | 2026-12-30 | 2027-01-10 | CON-LEG101-LR-9090, CON-LEG101-EN-3440 | 32d |
| CON-LEG101-LR-9290 |  | Installation of Concrete encased duct banks for for combined network of primary and secondary [Local – 05 ] | 7d | 2027-01-11 | 2027-01-18 | CON-LEG101-PR-3250, CON-LEG101-LR-9190, CON-LEG101-PR-1430 | 32d |
| CON-LEG101-LR-9390 |  | Installation of Reinforced concrete manhole [Local – 05 ] | 10d | 2027-01-19 | 2027-01-30 | CON-LEG101-LR-9290, CON-LEG101-PR-3260, CON-LEG101-LR-8820 | 32d |
|  | 11 | **CCTV feeding system and GSM** |  | 2026-12-12 | 2027-03-10 |  |  |
| CON-LEG101-LR-8610 |  | Excavation works for Low Voltage Cables for CCTV feeding system and GSM [Local – 05 ] | 4d | 2026-12-12 | 2026-12-15 | CON-LEG101-LR-8890, CON-LEG101-EN-3290, CON-LEG101-EN-3440 | 43d |
| CON-LEG101-LR-8680 |  | Installation of Low Voltage Cables for CCTV feeding system and GSM [Local – 05 ] | 6d | 2026-12-16 | 2026-12-22 | CON-LEG101-LR-8610, CON-LEG101-PR-1900 | 43d |
| CON-LEG101-LR-9440 |  | Installation of Fiber Optic Patch Panel 12 port [Local – 05 ] | 4d | 2026-12-23 | 2026-12-27 | CON-LEG101-LR-8680, CON-LEG101-PR-3360 | 43d |
| CON-LEG101-LR-9500 |  | Installation of 8POE ports Industrial Switches for remote poles [Local – 05 ] | 3d | 2026-12-28 | 2026-12-30 | CON-LEG101-LR-9440, CON-LEG101-PR-3410 | 43d |
| CON-LEG101-LR-9530 |  | Installation of Core Switch [Local – 05 ] | 8d | 2027-01-17 | 2027-01-25 | CON-LEG101-LR-9500, CON-LEG101-PR-3450 | 29d |
| CON-LEG101-LR-9550 |  | Installation of Access Switch 48 port [Local – 05 ] | 4d | 2027-01-26 | 2027-01-30 | CON-LEG101-LR-9530, CON-LEG101-PR-3490 | 29d |
| CON-LEG101-LR-9580 |  | Installation of Server [Local – 05 ] | 3d | 2027-01-31 | 2027-02-02 | CON-LEG101-LR-9550, CON-LEG101-PR-3530 | 29d |
| CON-LEG101-LR-9600 |  | Installation of Stand rack 42U- 19" [Local – 05 ] | 3d | 2027-02-03 | 2027-02-06 | CON-LEG101-LR-9580, CON-LEG101-PR-3570, CON-LEG101-LR-9390 | 29d |
| CON-LEG101-LR-9670 |  | Installation of IP Outdoor CCTV POE Camera,5 MP, Metal Housing [Local – 05 ] | 4d | 2027-02-07 | 2027-02-15 | CON-LEG101-LR-9600, CON-LEG101-PR-3610 | 29d |
| CON-LEG101-LR-9750 |  | Installation of Outdoor PTZ IP66 [Local – 05 ] | 3d | 2027-02-16 | 2027-02-18 | CON-LEG101-LR-9670, CON-LEG101-PR-3650 | 29d |
| CON-LEG101-LR-9810 |  | Installation of LED Screen 43" (24/7 operation) with Ethernet decoders [Local – 05 ] | 2d | 2027-02-20 | 2027-02-21 | CON-LEG101-PR-3950, CON-LEG101-LR-9750, CON-LEG101-PR-3290 | 29d |
| CON-LEG101-LR-9860 |  | Installation of Horizontal Power Distribution Unit (min 8 outlets) [Local – 05 ] | 3d | 2027-03-01 | 2027-03-03 | CON-LEG101-LR-9810, CON-LEG101-PR-3730 | 24d |
| CON-LEG101-LR-9910 |  | Installation of 25 Meters pole for CCTV Cameras [Local – 05 ] | 4d | 2027-03-04 | 2027-03-08 | CON-LEG101-LR-9860, CON-LEG101-PR-3870 | 24d |
| CON-LEG101-LR-10000 |  | Installation of Short Range wireless point to point wireless bridge [Local – 05 ] | 2d | 2027-03-09 | 2027-03-10 | CON-LEG101-LR-9910, CON-LEG101-PR-3910 | 24d |
|  | 12 | **Earthing System** |  | 2027-03-11 | 2027-03-13 |  |  |
| CON-LEG101-LR-15150 |  | Installation of Earthing for Distribution panels,SL feeder pillars, KWH, Unit substations and RMU [Local – 05 ] | 2d | 2027-03-11 | 2027-03-13 | CON-LEG101-LR-7540, CON-LEG101-LR-7460, CON-LEG101-LR-10000, CON-LEG101-LR-9910 | 24d |
|  | 9 | **Road Lighting** |  | 2027-01-25 | 2027-03-16 |  |  |
| CON-LEG101-LR-8140 |  | Installation of Lighting poles [Local – 05 ] | 20d | 2027-01-25 | 2027-02-21 | CON-LEG101-PR-1950, CON-LEG101-LR-7840, CON-LEG101-LR-8130, CON-LEG101-PR-1910 | 19d |
| CON-LEG101-LR-7460 |  | Installation of Unit Substation Including concrete foundations and fencing [Local – 05 ] | 7d | 2027-02-23 | 2027-03-02 | CON-LEG101-LR-8140, CON-LEG101-LR-8610, CON-LEG101-EN-3310, CON-LEG101-EN-3320, CON-LEG101-EN-3330, CON-LEG101-EN-3360, CON-LEG101-PR-1890 | 21d |
| CON-LEG101-LR-8240 |  | Installation of Street Lighting Luminaire [Local – 05 ] | 5d | 2027-02-23 | 2027-02-28 | CON-LEG101-LR-8140, CON-LEG101-PR-1920 | 30d |
| CON-LEG101-LR-7540 |  | Installation of Ring Main Unit RMU [Local – 05 ] | 7d | 2027-03-03 | 2027-03-10 | CON-LEG101-LR-8140, CON-LEG101-LR-7460, CON-LEG101-PR-2510 | 21d |
| CON-LEG101-LR-8390 |  | Installation of Earthing for Streetlighting feeders for every end pole circuits. [Local – 05 ] | 5d | 2027-03-11 | 2027-03-16 | CON-LEG101-LR-7460, CON-LEG101-LR-7540, CON-LEG101-PR-1480, CON-LEG101-LR-8240, CON-LEG101-PR-1310 | 21d |
|  | 6 | **Local – 06** |  | 2026-08-31 | 2027-03-18 |  |  |
|  | 5 | **TSE Network** |  | 2026-08-31 | 2026-12-07 |  |  |
|  | 2 | **Pipe Work** |  | 2026-08-31 | 2026-11-09 |  |  |
| CON-LEG101-LR-1380 |  | Excavation for TSE Network [Local – 06 ] | 10d | 2026-08-31 | 2026-09-10 | CON-LEG101-LR-3560, CON-LEG101-LR-3480, CON-LEG101-LR-11560, CON-LEG101-LR-4280, CON-LEG101-LR-2840, CON-LEG101-EN-1720, CON-LEG101-EN-1730, CON-LEG101-EN-1740, CON-LEG101-EN-1810 | 19d |
| CON-LEG101-LR-1490 |  | Granular bedding for TSE Network [Local – 06 ] | 7d | 2026-09-12 | 2026-09-19 | CON-LEG101-LR-1380 | 19d |
| CON-LEG101-LR-1600 |  | Installation of Pipe for TSE Network [Local – 06 ] | 10d | 2026-09-20 | 2026-10-01 | CON-LEG101-PR-2590, CON-LEG101-LR-1490, CON-LEG101-PR-1690 | 19d |
| CON-LEG101-LR-1710 |  | Testing for TSE Network [Local – 06 ] | 7d | 2026-10-03 | 2026-10-10 | CON-LEG101-LR-1600 | 19d |
| CON-LEG101-LR-1830 |  | Concrete encasement, pipe dia 110 mm [Local – 06 ] | 2d | 2026-10-11 | 2026-10-12 | CON-LEG101-LR-1710, CON-LEG101-EN-3450, CON-LEG101-PR-1430 | 19d |
| CON-LEG101-LR-1930 |  | Granular Surround for TSE Network [Local – 06 ] | 7d | 2026-10-13 | 2026-10-20 | CON-LEG101-LR-1830, CON-LEG101-EN-3450 | 19d |
| CON-LEG101-LR-2040 |  | Installation of Micron Marker Magnetic Tape [Local – 06 ] | 3d | 2026-10-21 | 2026-10-24 | CON-LEG101-LR-1930 | 19d |
| CON-LEG101-LR-2150 |  | Backfilling to Subgrade Elevation [Local – 06 ] | 14d | 2026-10-25 | 2026-11-09 | CON-LEG101-LR-2040, CON-LEG101-EN-3440 | 19d |
|  | 1 | **Valves/Chamber** |  | 2026-11-10 | 2026-12-07 |  |  |
| CON-LEG101-LR-2260 |  | Installation of Gate (Sluice) valves (Direct buried) [Local – 06 ] | 9d | 2026-11-10 | 2026-11-19 | CON-LEG101-LR-2150, CON-LEG101-LR-1600, CON-LEG101-PR-1970 | 26d |
| CON-LEG101-LR-2530 |  | Installation of Fire Hydrant [Local – 06 ] | 15d | 2026-11-21 | 2026-12-07 | CON-LEG101-LR-2150, CON-LEG101-LR-2260, CON-LEG101-PR-2470 | 26d |
|  | 6 | **Public Water Utility Distribution** |  | 2026-11-10 | 2027-01-18 |  |  |
|  | 2 | **Pipe Work** |  | 2026-11-10 | 2027-01-18 |  |  |
| CON-LEG101-LR-10110 |  | Excavation for Public Water Utility Distribution Piping [Local – 06 ] | 11d | 2026-11-10 | 2026-11-22 | CON-LEG101-LR-2150, CON-LEG101-LR-3480, CON-LEG101-LR-4280, CON-LEG101-EN-1690, CON-LEG101-EN-1700, CON-LEG101-EN-1710, CON-LEG101-EN-3440 | 19d |
| CON-LEG101-LR-10210 |  | Granular bedding for Public Water Utility Distribution Piping [Local – 06 ] | 8d | 2026-11-23 | 2026-12-01 | CON-LEG101-LR-10110 | 19d |
| CON-LEG101-LR-10310 |  | Installation of Pipe for Public Water Utility Distribution Piping [Local – 06 ] | 12d | 2026-12-02 | 2026-12-15 | CON-LEG101-PR-4010, CON-LEG101-LR-10210, CON-LEG101-PR-1660 | 19d |
| CON-LEG101-LR-10410 |  | Testing for Public Water Utility Distribution Piping [Local – 06 ] | 8d | 2026-12-16 | 2026-12-24 | CON-LEG101-LR-10310 | 19d |
| CON-LEG101-LR-10510 |  | Concrete encasement, pipe dia 110 mm [Local – 06 ] | 3d | 2026-12-26 | 2026-12-28 | CON-LEG101-LR-10410, CON-LEG101-EN-3450, CON-LEG101-PR-1430 | 19d |
| CON-LEG101-LR-10610 |  | Granular Surround for Public Water Utility Distribution Piping [Local – 06 ] | 8d | 2026-12-29 | 2027-01-06 | CON-LEG101-LR-10510, CON-LEG101-EN-3450 | 19d |
| CON-LEG101-LR-10710 |  | Installation of Micron Marker Magnetic Tape [Local – 06 ] | 3d | 2027-01-07 | 2027-01-10 | CON-LEG101-LR-10610 | 19d |
| CON-LEG101-LR-10810 |  | Backfilling to Subgrade Elevation [Local – 06 ] | 7d | 2027-01-11 | 2027-01-18 | CON-LEG101-LR-10710, CON-LEG101-EN-3440 | 19d |
|  | 1 | **Valves/Chamber** |  | 2027-01-11 | 2027-01-13 |  |  |
| CON-LEG101-LR-1070 |  | Installation of Gate (Sluice) valves (Direct buried) [Local – 06 ] | 3d | 2027-01-11 | 2027-01-13 | CON-LEG101-LR-10710, CON-LEG101-LR-10310, CON-LEG101-PR-1960 | 24d |
|  | 1 | **Electrical Works** |  | 2027-01-19 | 2027-02-06 |  |  |
|  | 3 | **Low Voltage** |  | 2027-01-19 | 2027-02-06 |  |  |
| CON-LEG101-LR-7850 |  | Excavation works for Low Voltage Cables [Local – 06 ] | 6d | 2027-01-19 | 2027-01-25 | CON-LEG101-LR-4280, CON-LEG101-LR-11560, CON-LEG101-LR-3480, CON-LEG101-LR-3560, CON-LEG101-LR-2150, CON-LEG101-LR-10810, CON-LEG101-LR-6950, CON-LEG101-EN-1680, CON-LEG101-EN-3440, CON-LEG101-LR-1070 | 20d |

| ID | WBS | Task | Duration | Start | Finish | Predecessors | Total float |
| --- | --- | --- | --- | --- | --- | --- | --- |
| CON-LEG101-LR-8050 |  | Installation of Low Voltage Cables Duct Banks [Local – 06 ] | 4d | 2027-01-26 | 2027-01-30 | CON-LEG101-LR-7850, CON-LEG101-PR-1320 | 20d |
| CON-LEG101-LR-7950 |  | Installation of Low Voltage Cables [Local – 06 ] | 6d | 2027-01-31 | 2027-02-06 | CON-LEG101-LR-8050, CON-LEG101-LR-7850, CON-LEG101-PR-1900 | 20d |
|  | 10 | **Telecommunications** |  | 2027-02-07 | 2027-03-17 |  |  |
| CON-LEG101-LR-8900 |  | Installation of Sand and soil encased duct banks for primary network [Local – 06 ] | 4d | 2027-02-07 | 2027-02-15 | CON-LEG101-LR-7850, CON-LEG101-EN-3280, CON-LEG101-EN-3440, CON-LEG101-LR-7950 | 20d |
| CON-LEG101-LR-9000 |  | Installation of Concrete encased duct banks for primary network [Local – 06 ] | 6d | 2027-02-16 | 2027-02-23 | CON-LEG101-PR-3180, CON-LEG101-PR-4020, CON-LEG101-LR-8900, CON-LEG101-PR-1430 | 20d |
| CON-LEG101-LR-9100 |  | Installation of Sand encased duct banks for secondary network [Local – 06 ] | 5d | 2027-02-24 | 2027-03-01 | CON-LEG101-LR-9000, CON-LEG101-EN-3440 | 20d |
| CON-LEG101-LR-9200 |  | Installation of Sand and soil encased duct banks, for combined network of primary and secondary [Local – 06 ] | 4d | 2027-03-02 | 2027-03-06 | CON-LEG101-LR-9100, CON-LEG101-EN-3440 | 20d |
| CON-LEG101-LR-9300 |  | Installation of Concrete encased duct banks for for combined network of primary and secondary [Local – 06 ] | 4d | 2027-03-07 | 2027-03-10 | CON-LEG101-PR-3250, CON-LEG101-LR-9200, CON-LEG101-PR-1430 | 20d |
| CON-LEG101-LR-9400 |  | Installation of Reinforced concrete manhole [Local – 06 ] | 6d | 2027-03-11 | 2027-03-17 | CON-LEG101-LR-9300, CON-LEG101-PR-3260 | 20d |
|  | 11 | **CCTV feeding system and GSM** |  | 2027-02-16 | 2027-03-14 |  |  |
| CON-LEG101-LR-9510 |  | Installation of 8POE ports Industrial Switches for remote poles [Local – 06 ] | 7d | 2027-02-16 | 2027-02-24 | CON-LEG101-LR-8900, CON-LEG101-PR-3410 | 20d |
| CON-LEG101-LR-9680 |  | Installation of IP Outdoor CCTV POE Camera,5 MP, Metal Housing [Local – 06 ] | 4d | 2027-02-25 | 2027-03-01 | CON-LEG101-LR-9510, CON-LEG101-PR-3610 | 20d |
| CON-LEG101-LR-9760 |  | Installation of Outdoor PTZ IP66 [Local – 06 ] | 3d | 2027-03-02 | 2027-03-04 | CON-LEG101-LR-9680, CON-LEG101-PR-3650 | 20d |
| CON-LEG101-LR-9920 |  | Installation of 25 Meters pole for CCTV Cameras [Local – 06 ] | 4d | 2027-03-06 | 2027-03-09 | CON-LEG101-LR-9760, CON-LEG101-PR-3870 | 20d |
| CON-LEG101-LR-10010 |  | Installation of Short Range wireless point to point wireless bridge [Local – 06 ] | 4d | 2027-03-10 | 2027-03-14 | CON-LEG101-LR-9920, CON-LEG101-PR-3910 | 20d |
|  | 12 | **Earthing System** |  | 2027-03-16 | 2027-03-18 |  |  |
| CON-LEG101-LR-15140 |  | Installation of Earthing for Distribution panels,SL feeder pillars, KWH, Unit substations and RMU [Local – 06 ] | 3d | 2027-03-16 | 2027-03-18 | CON-LEG101-LR-10010, CON-LEG101-LR-9920, CON-LEG101-LR-7550, CON-LEG101-LR-7470 | 19d |
|  | 9 | **Road Lighting** |  | 2027-02-23 | 2027-03-18 |  |  |
| CON-LEG101-LR-8150 |  | Installation of Lighting poles [Local – 06 ] | 10d | 2027-02-23 | 2027-03-06 | CON-LEG101-PR-1950, CON-LEG101-LR-7850, CON-LEG101-LR-8140, CON-LEG101-PR-1910 | 19d |
| CON-LEG101-LR-7470 |  | Installation of Unit Substation Including concrete foundations and fencing [Local – 06 ] | 4d | 2027-03-07 | 2027-03-10 | CON-LEG101-LR-8150, CON-LEG101-LR-9510, CON-LEG101-EN-3310, CON-LEG101-EN-3320, CON-LEG101-EN-3330, CON-LEG101-EN-3360, CON-LEG101-PR-1890 | 19d |
| CON-LEG101-LR-8250 |  | Installation of Street Lighting Luminaire [Local – 06 ] | 4d | 2027-03-07 | 2027-03-10 | CON-LEG101-LR-8150, CON-LEG101-PR-1920 | 23d |
| CON-LEG101-LR-7550 |  | Installation of Ring Main Unit RMU [Local – 06 ] | 4d | 2027-03-11 | 2027-03-15 | CON-LEG101-LR-7470, CON-LEG101-PR-2510 | 19d |
| CON-LEG101-LR-8400 |  | Installation of Earthing for Streetlighting feeders for every end pole circuits. [Local – 06 ] | 3d | 2027-03-16 | 2027-03-18 | CON-LEG101-LR-7550, CON-LEG101-LR-7470, CON-LEG101-PR-1480, CON-LEG101-LR-8250, CON-LEG101-PR-1310 | 19d |
|  | 7 | **Local – 07** |  | 2026-12-08 | 2027-03-18 |  |  |
|  | 5 | **TSE Network** |  | 2026-12-08 | 2027-03-02 |  |  |
|  | 2 | **Pipe Work** |  | 2026-12-08 | 2027-01-10 |  |  |
| CON-LEG101-LR-1390 |  | Excavation for TSE Network [Local – 07 ] | 7d | 2026-12-08 | 2026-12-15 | CON-LEG101-LR-3570, CON-LEG101-LR-3490, CON-LEG101-LR-11650, CON-LEG101-LR-4290, CON-LEG101-LR-2150, CON-LEG101-LR-2850, CON-LEG101-EN-1720, CON-LEG101-EN-1730, CON-LEG101-EN-1740, CON-LEG101-EN-1810, CON-LEG101-LR-2530 | 26d |
| CON-LEG101-LR-1500 |  | Granular bedding for TSE Network [Local – 07 ] | 2d | 2026-12-16 | 2026-12-17 | CON-LEG101-LR-1390 | 26d |
| CON-LEG101-LR-1610 |  | Installation of Pipe for TSE Network [Local – 07 ] | 7d | 2026-12-19 | 2026-12-26 | CON-LEG101-PR-2590, CON-LEG101-LR-1500, CON-LEG101-PR-1690 | 26d |
| CON-LEG101-LR-1720 |  | Testing for TSE Network [Local – 07 ] | 4d | 2026-12-27 | 2026-12-30 | CON-LEG101-LR-1610 | 26d |
| CON-LEG101-LR-1940 |  | Granular Surround for TSE Network [Local – 07 ] | 2d | 2026-12-31 | 2027-01-02 | CON-LEG101-LR-1720, CON-LEG101-EN-3450 | 26d |
| CON-LEG101-LR-2050 |  | Installation of Micron Marker Magnetic Tape [Local – 07 ] | 3d | 2027-01-03 | 2027-01-05 | CON-LEG101-LR-1940 | 26d |
| CON-LEG101-LR-2160 |  | Backfilling to Subgrade Elevation [Local – 07 ] | 4d | 2027-01-06 | 2027-01-10 | CON-LEG101-LR-2050, CON-LEG101-EN-3440 | 26d |
|  | 1 | **Valves/Chamber** |  | 2027-01-27 | 2027-03-02 |  |  |
| CON-LEG101-LR-2270 |  | Installation of Gate (Sluice) valves (Direct buried) [Local – 07 ] | 10d | 2027-01-27 | 2027-02-07 | CON-LEG101-LR-2160, CON-LEG101-LR-1610, CON-LEG101-PR-1970, CON-LEG101-LR-2740, CON-LEG101-LR-2530, CON-LEG101-LR-10810, CON-LEG101-LR-2250 | 28d |
| CON-LEG101-LR-2540 |  | Installation of Fire Hydrant [Local – 07 ] | 15d | 2027-02-08 | 2027-03-02 | CON-LEG101-LR-2160, CON-LEG101-LR-2270, CON-LEG101-PR-2470 | 28d |
|  | 6 | **Public Water Utility Distribution** |  | 2027-01-19 | 2027-03-18 |  |  |
|  | 2 | **Pipe Work** |  | 2027-01-19 | 2027-03-13 |  |  |
| CON-LEG101-LR-10120 |  | Excavation for Public Water Utility Distribution Piping [Local – 07 ] | 10d | 2027-01-19 | 2027-01-30 | CON-LEG101-LR-10810, CON-LEG101-LR-2160, CON-LEG101-LR-3490, CON-LEG101-LR-4290, CON-LEG101-EN-1690, CON-LEG101-EN-1700, CON-LEG101-EN-1710, CON-LEG101-EN-3440 | 19d |
| CON-LEG101-LR-10220 |  | Granular bedding for Public Water Utility Distribution Piping [Local – 07 ] | 4d | 2027-01-31 | 2027-02-03 | CON-LEG101-LR-10120 | 19d |
| CON-LEG101-LR-10320 |  | Installation of Pipe for Public Water Utility Distribution Piping [Local – 07 ] | 10d | 2027-02-04 | 2027-02-20 | CON-LEG101-PR-4010, CON-LEG101-LR-10220, CON-LEG101-PR-1660 | 19d |
| CON-LEG101-LR-10420 |  | Testing for Public Water Utility Distribution Piping [Local – 07 ] | 3d | 2027-02-21 | 2027-02-24 | CON-LEG101-LR-10320 | 19d |
| CON-LEG101-LR-10520 |  | Concrete encasement, pipe dia 110 mm [Local – 07 ] | 6d | 2027-02-25 | 2027-03-03 | CON-LEG101-LR-10420, CON-LEG101-EN-3450, CON-LEG101-PR-1430 | 19d |
| CON-LEG101-LR-10620 |  | Granular Surround for Public Water Utility Distribution Piping [Local – 07 ] | 3d | 2027-03-04 | 2027-03-07 | CON-LEG101-LR-10520, CON-LEG101-EN-3450 | 19d |
| CON-LEG101-LR-10720 |  | Installation of Micron Marker Magnetic Tape [Local – 07 ] | 3d | 2027-03-08 | 2027-03-10 | CON-LEG101-LR-10620 | 19d |
| CON-LEG101-LR-10820 |  | Backfilling to Subgrade Elevation [Local – 07 ] | 2d | 2027-03-11 | 2027-03-13 | CON-LEG101-LR-10720, CON-LEG101-EN-3440 | 19d |
|  | 1 | **Valves/Chamber** |  | 2027-03-14 | 2027-03-18 |  |  |
| CON-LEG101-LR-1080 |  | Installation of Gate (Sluice) valves (Direct buried) [Local – 07 ] | 5d | 2027-03-14 | 2027-03-18 | CON-LEG101-LR-10820, CON-LEG101-LR-10320, CON-LEG101-PR-1960, CON-LEG101-LR-2540 | 19d |
|  | 1 | **Electrical Works** |  | 2027-01-31 | 2027-02-24 |  |  |
|  | 3 | **Low Voltage** |  | 2027-01-31 | 2027-02-24 |  |  |
| CON-LEG101-LR-7860 |  | Excavation works for Low Voltage Cables [Local – 07 ] | 7d | 2027-01-31 | 2027-02-07 | CON-LEG101-LR-4290, CON-LEG101-LR-11650, CON-LEG101-LR-3490, CON-LEG101-LR-3570, CON-LEG101-LR-2160, CON-LEG101-LR-10120, CON-LEG101-LR-6960, CON-LEG101-EN-1680, CON-LEG101-EN-3440 | 19d |
| CON-LEG101-LR-8060 |  | Installation of Low Voltage Cables Duct Banks [Local – 07 ] | 3d | 2027-02-08 | 2027-02-15 | CON-LEG101-LR-7860, CON-LEG101-PR-1320 | 19d |
| CON-LEG101-LR-7960 |  | Installation of Low Voltage Cables [Local – 07 ] | 7d | 2027-02-16 | 2027-02-24 | CON-LEG101-LR-8060, CON-LEG101-LR-7860, CON-LEG101-PR-1900 | 19d |
|  | 10 | **Telecommunications** |  | 2027-02-20 | 2027-03-14 |  |  |
| CON-LEG101-LR-8910 |  | Installation of Sand and soil encased duct banks for primary network [Local – 07 ] | 4d | 2027-02-20 | 2027-02-24 | CON-LEG101-LR-7860, CON-LEG101-EN-3280, CON-LEG101-EN-3440, CON-LEG101-LR-7960 SS+3d | 19d |
| CON-LEG101-LR-9010 |  | Installation of Concrete encased duct banks for primary network [Local – 07 ] | 2d | 2027-02-25 | 2027-02-27 | CON-LEG101-PR-3180, CON-LEG101-PR-4020, CON-LEG101-LR-8910, CON-LEG101-PR-1430 | 19d |
| CON-LEG101-LR-9110 |  | Installation of Sand encased duct banks for secondary network [Local – 07 ] | 3d | 2027-02-28 | 2027-03-02 | CON-LEG101-LR-9010, CON-LEG101-EN-3440 | 19d |
| CON-LEG101-LR-9210 |  | Installation of Sand and soil encased duct banks, for combined network of primary and secondary [Local – 07 ] | 4d | 2027-03-03 | 2027-03-07 | CON-LEG101-LR-9110, CON-LEG101-EN-3440 | 19d |
| CON-LEG101-LR-9310 |  | Installation of Concrete encased duct banks for for combined network of primary and secondary [Local – 07 ] | 2d | 2027-03-08 | 2027-03-09 | CON-LEG101-PR-3250, CON-LEG101-LR-9210, CON-LEG101-PR-1430 | 19d |
| CON-LEG101-LR-9410 |  | Installation of Reinforced concrete manhole [Local – 07 ] | 4d | 2027-03-10 | 2027-03-14 | CON-LEG101-LR-9310, CON-LEG101-PR-3260 | 19d |
|  | 11 | **CCTV feeding system and GSM** |  | 2027-02-25 | 2027-03-04 |  |  |
| CON-LEG101-LR-10020 |  | Installation of Short Range wireless point to point wireless bridge [Local – 07 ] | 7d | 2027-02-25 | 2027-03-04 | CON-LEG101-LR-8910, CON-LEG101-PR-3910 | 19d |
|  | 12 | **Earthing System** |  | 2027-03-15 | 2027-03-18 |  |  |
| CON-LEG101-LR-15130 |  | Installation of Earthing for Distribution panels,SL feeder pillars, KWH, Unit substations and RMU [Local – 07 ] | 4d | 2027-03-15 | 2027-03-18 | CON-LEG101-LR-9410, CON-LEG101-LR-10020, CON-LEG101-LR-7560, CON-LEG101-LR-7480 | 19d |
|  | 9 | **Road Lighting** |  | 2027-02-23 | 2027-03-18 |  |  |
| CON-LEG101-LR-8160 |  | Installation of Lighting poles [Local – 07 ] | 7d | 2027-02-23 | 2027-03-02 | CON-LEG101-PR-1950, CON-LEG101-LR-7860, CON-LEG101-LR-8150 SS, CON-LEG101-PR-1910 | 19d |
| CON-LEG101-LR-8260 |  | Installation of Street Lighting Luminaire [Local – 07 ] | 7d | 2027-03-03 | 2027-03-10 | CON-LEG101-LR-8160, CON-LEG101-PR-1920 | 22d |
| CON-LEG101-LR-7480 |  | Installation of Unit Substation Including concrete foundations and fencing [Local – 07 ] | 4d | 2027-03-06 | 2027-03-09 | CON-LEG101-LR-8160, CON-LEG101-LR-10020, CON-LEG101-EN-3310, CON-LEG101-EN-3320, CON-LEG101-EN-3330, CON-LEG101-EN-3360, CON-LEG101-PR-1890 | 19d |
| CON-LEG101-LR-7560 |  | Installation of Ring Main Unit RMU [Local – 07 ] | 4d | 2027-03-10 | 2027-03-14 | CON-LEG101-LR-7480, CON-LEG101-PR-2510 | 19d |
| CON-LEG101-LR-8410 |  | Installation of Earthing for Streetlighting feeders for every end pole circuits. [Local – 07 ] | 4d | 2027-03-15 | 2027-03-18 | CON-LEG101-LR-7480, CON-LEG101-LR-7560, CON-LEG101-PR-1480, CON-LEG101-LR-8260, CON-LEG101-PR-1310 | 19d |

| ID | WBS | Task | Duration | Start | Finish | Predecessors | Total float |
| --- | --- | --- | --- | --- | --- | --- | --- |
|  | 8 | **Local – 08** |  | 2026-08-11 | 2027-03-18 |  |  |
|  | 5 | **TSE Network** |  | 2026-08-11 | 2027-03-18 |  |  |
|  | 2 | **Pipe Work** |  | 2026-08-11 | 2026-11-08 |  |  |
| CON-LEG101-LR-1400 |  | Excavation for TSE Network [Local – 08 ] | 11d | 2026-08-11 | 2026-08-23 | CON-LEG101-LR-4300, CON-LEG101-LR-11740, CON-LEG101-LR-3670, CON-LEG101-EN-1720, CON-LEG101-EN-1730, CON-LEG101-EN-1740, CON-LEG101-EN-1810 | 19d |
| CON-LEG101-LR-1510 |  | Granular bedding for TSE Network [Local – 08 ] | 9d | 2026-08-24 | 2026-09-02 | CON-LEG101-LR-1400 | 19d |
| CON-LEG101-LR-1620 |  | Installation of Pipe for TSE Network [Local – 08 ] | 15d | 2026-09-03 | 2026-09-20 | CON-LEG101-PR-2590, CON-LEG101-LR-1510, CON-LEG101-PR-1690 | 19d |
| CON-LEG101-LR-1730 |  | Testing for TSE Network [Local – 08 ] | 9d | 2026-09-21 | 2026-10-01 | CON-LEG101-LR-1620 | 19d |
| CON-LEG101-LR-1840 |  | Concrete encasement, pipe dia 110 mm [Local – 08 ] | 2d | 2026-10-03 | 2026-10-04 | CON-LEG101-LR-1730, CON-LEG101-EN-3450, CON-LEG101-PR-1430 | 19d |
| CON-LEG101-LR-1950 |  | Granular Surround for TSE Network [Local – 08 ] | 9d | 2026-10-05 | 2026-10-14 | CON-LEG101-LR-1840, CON-LEG101-EN-3450 | 19d |
| CON-LEG101-LR-2060 |  | Installation of Micron Marker Magnetic Tape [Local – 08 ] | 4d | 2026-10-15 | 2026-10-19 | CON-LEG101-LR-1950 | 19d |
| CON-LEG101-LR-2170 |  | Backfilling to Subgrade Elevation [Local – 08 ] | 17d | 2026-10-20 | 2026-11-08 | CON-LEG101-LR-2060, CON-LEG101-EN-3440 | 19d |
|  | 1 | **Valves/Chamber** |  | 2026-11-09 | 2027-03-18 |  |  |
| CON-LEG101-LR-2670 |  | Installation of Wash out chambers [Local – 08 ] | 21d | 2026-11-09 | 2026-12-02 | CON-LEG101-LR-1620, CON-LEG101-PR-1970, CON-LEG101-LR-2170 | 19d |
| CON-LEG101-LR-2750 |  | Installation of Air Valve chambers [Local – 08 ] | 21d | 2026-12-03 | 2026-12-27 | CON-LEG101-LR-2670, CON-LEG101-PR-1970 | 19d |
| CON-LEG101-LR-2280 |  | Installation of Gate (Sluice) valves (Direct buried) [Local – 08 ] | 14d | 2026-12-28 | 2027-01-12 | CON-LEG101-LR-2170, CON-LEG101-LR-2670, CON-LEG101-LR-2750, CON-LEG101-LR-1620, CON-LEG101-PR-1970 | 19d |
| CON-LEG101-LR-2370 |  | Installation of Wash-out Valves [Local – 08 ] | 15d | 2027-01-13 | 2027-01-30 | CON-LEG101-LR-2670, CON-LEG101-LR-2280, CON-LEG101-PR-1970 | 19d |
| CON-LEG101-LR-2450 |  | Installation of Air Valves [Local – 08 ] | 15d | 2027-01-31 | 2027-02-21 | CON-LEG101-LR-2750, CON-LEG101-LR-2370, CON-LEG101-PR-1970 | 19d |
| CON-LEG101-LR-2550 |  | Installation of Fire Hydrant [Local – 08 ] | 21d | 2027-02-23 | 2027-03-18 | CON-LEG101-LR-2170, CON-LEG101-LR-2450, CON-LEG101-PR-2470 | 19d |
|  | 6 | **Public Water Utility Distribution** |  | 2026-11-09 | 2027-03-18 |  |  |
|  | 2 | **Pipe Work** |  | 2026-11-09 | 2027-01-16 |  |  |
| CON-LEG101-LR-10130 |  | Excavation for Public Water Utility Distribution Piping [Local – 08 ] | 11d | 2026-11-09 | 2026-11-21 | CON-LEG101-LR-2170, CON-LEG101-LR-4300, CON-LEG101-EN-1690, CON-LEG101-EN-1700, CON-LEG101-EN-1710, CON-LEG101-EN-3440 | 19d |
| CON-LEG101-LR-10230 |  | Granular bedding for Public Water Utility Distribution Piping [Local – 08 ] | 8d | 2026-11-22 | 2026-11-30 | CON-LEG101-LR-10130 | 19d |
| CON-LEG101-LR-10330 |  | Installation of Pipe for Public Water Utility Distribution Piping [Local – 08 ] | 11d | 2026-12-01 | 2026-12-13 | CON-LEG101-PR-4010, CON-LEG101-LR-10230, CON-LEG101-PR-1660 | 19d |
| CON-LEG101-LR-10430 |  | Testing for Public Water Utility Distribution Piping [Local – 08 ] | 8d | 2026-12-14 | 2026-12-22 | CON-LEG101-LR-10330 | 19d |
| CON-LEG101-LR-10530 |  | Concrete encasement, pipe dia 110 mm [Local – 08 ] | 3d | 2026-12-23 | 2026-12-26 | CON-LEG101-LR-10430, CON-LEG101-EN-3450, CON-LEG101-PR-1430 | 19d |
| CON-LEG101-LR-10630 |  | Granular Surround for Public Water Utility Distribution Piping [Local – 08 ] | 8d | 2026-12-27 | 2027-01-04 | CON-LEG101-LR-10530, CON-LEG101-EN-3450 | 19d |
| CON-LEG101-LR-10730 |  | Installation of Micron Marker Magnetic Tape [Local – 08 ] | 3d | 2027-01-05 | 2027-01-07 | CON-LEG101-LR-10630 | 19d |
| CON-LEG101-LR-10830 |  | Backfilling to Subgrade Elevation [Local – 08 ] | 7d | 2027-01-09 | 2027-01-16 | CON-LEG101-LR-10730, CON-LEG101-EN-3440 | 19d |
|  | 1 | **Valves/Chamber** |  | 2027-03-14 | 2027-03-18 |  |  |
| CON-LEG101-LR-1090 |  | Installation of Gate (Sluice) valves (Direct buried) [Local – 08 ] | 5d | 2027-03-14 | 2027-03-18 | CON-LEG101-LR-10830, CON-LEG101-LR-10330, CON-LEG101-PR-1960, CON-LEG101-LR-1080 SS | 19d |
|  | 1 | **Electrical Works** |  | 2027-01-17 | 2027-03-02 |  |  |
|  | 3 | **Low Voltage** |  | 2027-01-17 | 2027-03-02 |  |  |
| CON-LEG101-LR-7870 |  | Excavation works for Low Voltage Cables [Local – 08 ] | 10d | 2027-01-17 | 2027-01-27 | CON-LEG101-LR-4300, CON-LEG101-LR-11740, CON-LEG101-LR-2170, CON-LEG101-LR-10830, CON-LEG101-EN-1680, CON-LEG101-EN-3440 | 19d |
| CON-LEG101-LR-8070 |  | Installation of Low Voltage Cables Duct Banks [Local – 08 ] | 10d | 2027-01-28 | 2027-02-08 | CON-LEG101-LR-7870, CON-LEG101-PR-1320 | 20d |
| CON-LEG101-LR-7970 |  | Installation of Low Voltage Cables [Local – 08 ] | 7d | 2027-02-14 | 2027-02-21 | CON-LEG101-LR-8070, CON-LEG101-LR-7870, CON-LEG101-PR-1900 | 20d |
| CON-LEG101-LR-8500 |  | Installation of Low Voltage Distribution Panel [Local – 08 ] | 7d | 2027-02-23 | 2027-03-02 | CON-LEG101-LR-7970, CON-LEG101-LR-8070, CON-LEG101-PR-2550 | 20d |
|  | 10 | **Telecommunications** |  | 2027-01-28 | 2027-03-16 |  |  |
| CON-LEG101-LR-8920 |  | Installation of Sand and soil encased duct banks for primary network [Local – 08 ] | 8d | 2027-01-28 | 2027-02-06 | CON-LEG101-LR-7870, CON-LEG101-EN-3280, CON-LEG101-EN-3440 | 19d |
| CON-LEG101-LR-9020 |  | Installation of Concrete encased duct banks for primary network [Local – 08 ] | 8d | 2027-02-07 | 2027-02-20 | CON-LEG101-PR-3180, CON-LEG101-LR-8920, CON-LEG101-PR-1430 | 19d |
| CON-LEG101-LR-9120 |  | Installation of Sand encased duct banks for secondary network [Local – 08 ] | 5d | 2027-02-21 | 2027-02-27 | CON-LEG101-LR-9020, CON-LEG101-EN-3440 | 19d |
| CON-LEG101-LR-9220 |  | Installation of Sand and soil encased duct banks, for combined network of primary and secondary [Local – 08 ] | 4d | 2027-02-28 | 2027-03-03 | CON-LEG101-LR-9120, CON-LEG101-EN-3440 | 19d |
| CON-LEG101-LR-9320 |  | Installation of Concrete encased duct banks for for combined network of primary and secondary [Local – 08 ] | 5d | 2027-03-04 | 2027-03-09 | CON-LEG101-PR-3250, CON-LEG101-LR-9220, CON-LEG101-PR-1430, CON-LEG101-LR-8500 | 19d |
| CON-LEG101-LR-9420 |  | Installation of Reinforced concrete manhole [Local – 08 ] | 6d | 2027-03-10 | 2027-03-16 | CON-LEG101-LR-9320, CON-LEG101-PR-3260 | 19d |
|  | 11 | **CCTV feeding system and GSM** |  | 2027-02-07 | 2027-03-11 |  |  |
| CON-LEG101-LR-9770 |  | Installation of Outdoor PTZ IP66 [Local – 08 ] | 3d | 2027-02-07 | 2027-02-14 | CON-LEG101-LR-8920, CON-LEG101-PR-3650 | 23d |
| CON-LEG101-LR-9820 |  | Installation of LED Screen 43" (24/7 operation) with Ethernet decoders [Local – 08 ] | 7d | 2027-02-15 | 2027-02-23 | CON-LEG101-PR-3950, CON-LEG101-LR-9770, CON-LEG101-PR-3290 | 23d |
| CON-LEG101-LR-9930 |  | Installation of 25 Meters pole for CCTV Cameras [Local – 08 ] | 7d | 2027-02-24 | 2027-03-03 | CON-LEG101-LR-9820, CON-LEG101-PR-3870 | 23d |
| CON-LEG101-LR-10030 |  | Installation of Short Range wireless point to point wireless bridge [Local – 08 ] | 7d | 2027-03-04 | 2027-03-11 | CON-LEG101-LR-9930, CON-LEG101-PR-3910 | 23d |
|  | 12 | **Earthing System** |  | 2027-03-17 | 2027-03-18 |  |  |
| CON-LEG101-LR-8320 |  | Installation of Earthing for Distribution panels,SL feeder pillars, KWH, Unit substations and RMU [Local – 08 ] | 2d | 2027-03-17 | 2027-03-18 | CON-LEG101-LR-8470, CON-LEG101-LR-7570, CON-LEG101-LR-9420, CON-LEG101-LR-10030, CON-LEG101-PR-1480, CON-LEG101-LR-9770, CON-LEG101-PR-1310 | 19d |
|  | 9 | **Road Lighting** |  | 2027-02-23 | 2027-03-18 |  |  |
| CON-LEG101-LR-8170 |  | Installation of Lighting poles [Local – 08 ] | 7d | 2027-02-23 | 2027-03-02 | CON-LEG101-PR-1950, CON-LEG101-LR-7870, CON-LEG101-LR-8160 SS, CON-LEG101-PR-1910 | 19d |
| CON-LEG101-LR-7490 |  | Installation of Unit Substation Including concrete foundations and fencing [Local – 08 ] | 4d | 2027-03-03 | 2027-03-07 | CON-LEG101-LR-8170, CON-LEG101-EN-3310, CON-LEG101-EN-3320, CON-LEG101-EN-3330, CON-LEG101-EN-3360, CON-LEG101-PR-1890 | 19d |
| CON-LEG101-LR-8270 |  | Installation of Street Lighting Luminaire [Local – 08 ] | 4d | 2027-03-03 | 2027-03-07 | CON-LEG101-LR-8170, CON-LEG101-PR-1920 | 27d |
| CON-LEG101-LR-7570 |  | Installation of Ring Main Unit RMU [Local – 08 ] | 4d | 2027-03-08 | 2027-03-11 | CON-LEG101-LR-7490, CON-LEG101-PR-2510 | 19d |
| CON-LEG101-LR-8470 |  | Installation of Street Lighting feeder pillars / Lighting panels [Local – 08 ] | 4d | 2027-03-13 | 2027-03-16 | CON-LEG101-LR-7570, CON-LEG101-LR-8170, CON-LEG101-PR-1940, CON-LEG101-PR-2550 | 19d |
| CON-LEG101-LR-8420 |  | Installation of Earthing for Streetlighting feeders for every end pole circuits. [Local – 08 ] | 2d | 2027-03-17 | 2027-03-18 | CON-LEG101-LR-8470, CON-LEG101-LR-7570, CON-LEG101-LR-7490, CON-LEG101-PR-1480, CON-LEG101-LR-8270, CON-LEG101-PR-1310 | 19d |
|  | 3 | **Bridge** |  | 2026-03-04 | 2027-06-01 |  |  |
|  | 1 | **Substructure** |  | 2026-03-04 | 2026-08-09 |  |  |
|  | 1 | **Earth Work** |  | 2026-03-04 | 2026-06-03 |  |  |
| CON-LEG101-BR-1000 |  | Excavation for Bridge [Bridge ] | 21d | 2026-03-04 | 2026-04-01 | CON-LEG101-EN-1150, CON-LEG101-SD-1000, CON-LEG101-SD-1010, CON-LEG101-SD-1020, CON-LEG101-SD-1030, CON-LEG101-EN-3440 | 8d |
| CON-LEG101-BR-1010 |  | Parcrels Excavation for Bridge [Bridge ] | 21d | 2026-04-02 | 2026-04-26 | CON-LEG101-BR-1000, CON-LEG101-EN-3440 | 8d |
| CON-LEG101-BR-1140 |  | Embankments to the Bridge [Bridge ] | 15d | 2026-04-27 | 2026-05-13 | CON-LEG101-BR-1010, CON-LEG101-EN-3440 | 8d |
| CON-LEG101-BR-1240 |  | Embankments to the parcels for Bridge [Bridge ] | 14d | 2026-05-14 | 2026-06-03 | CON-LEG101-BR-1140, CON-LEG101-EN-3440 | 8d |
|  | 2 | **Piling** |  | 2026-06-04 | 2026-06-28 |  |  |
| CON-LEG101-BR-1020 |  | Reinforced concrete Piles [Bridge ] | 21d | 2026-06-04 | 2026-06-28 | CON-LEG101-BR-1000, CON-LEG101-EN-3560, CON-LEG101-EN-1150, CON-LEG101-EN-1150 FF, CON-LEG101-EN-1160, CON-LEG101-BR-1240 | 8d |
|  | 3 | **Pile Caps & Abutments** |  | 2026-06-29 | 2026-08-09 |  |  |
| CON-LEG101-BR-1030 |  | Reinforced concrete for pile caps and abutment [Bridge ] | 21d | 2026-06-29 | 2026-07-22 | CON-LEG101-BR-1020, CON-LEG101-EN-1170, CON-LEG101-EN-1160 | 14d |
| CON-LEG101-BR-1180 |  | Installation of Elastomeric Bearings [Bridge ] | 15d | 2026-07-23 | 2026-08-09 | CON-LEG101-BR-1030, CON-LEG101-PR-2240 | 14d |
|  | 2 | **Superstructure** |  | 2026-06-29 | 2027-01-20 |  |  |

| ID | WBS | Task | Duration | Start | Finish | Predecessors | Total float |
| --- | --- | --- | --- | --- | --- | --- | --- |
|  | 1 | **Girder** |  | 2026-06-29 | 2026-10-05 |  |  |
|  | 1 | **Casting** |  | 2026-06-29 | 2026-08-16 |  |  |
| CON-LEG101-BR-1100 |  | Steel Reinforced Work | 21d | 2026-06-29 | 2026-07-22 | CON-LEG101-PR-1410, CON-LEG101-BR-1020, CON-LEG101-EN-1150, CON-LEG101-EN-1160, CON-LEG101-EN-1170 | 8d |
| CON-LEG101-BR-1110 |  | Formwork and Casting | 21d | 2026-07-23 | 2026-08-16 | CON-LEG101-BR-1100 | 8d |
|  | 2 | **Installation** |  | 2026-08-17 | 2026-10-05 |  |  |
| CON-LEG101-BR-1120 |  | Prestressing Strands | 21d | 2026-08-17 | 2026-09-09 | CON-LEG101-PR-2400, CON-LEG101-BR-1110, CON-LEG101-BR-1030, CON-LEG101-PR-2140, CON-LEG101-BR-1180 | 8d |
| CON-LEG101-BR-1130 |  | Installation of Girder | 21d | 2026-09-10 | 2026-10-05 | CON-LEG101-BR-1180, CON-LEG101-BR-1120, CON-LEG101-PR-2240, CON-LEG101-EN-1200 | 8d |
|  | 2 | **Slab Casting** |  | 2026-10-06 | 2027-01-20 |  |  |
|  | 1 | **Top Slabs** |  | 2026-10-06 | 2026-12-05 |  |  |
| CON-LEG101-BR-1050 |  | Formwork for Top Slab | 21d | 2026-10-06 | 2026-10-29 | CON-LEG101-BR-1130, CON-LEG101-PR-2410 | 8d |
| CON-LEG101-BR-1040 |  | Steel Reinforced Work for Top Slab | 21d | 2026-10-31 | 2026-11-23 | CON-LEG101-BR-1050, CON-LEG101-BR-1130, CON-LEG101-EN-1190, CON-LEG101-EN-1210 | 8d |
| CON-LEG101-BR-1060 |  | Casting Concrete & Treatment for Top Slab | 10d | 2026-11-24 | 2026-12-05 | CON-LEG101-BR-1040, CON-LEG101-BR-1050 | 8d |
|  | 2 | **Apron Slabs** |  | 2026-12-06 | 2027-01-20 |  |  |
| CON-LEG101-BR-1250 |  | Lean concrete For Apron Slab [Bridge ] | 4d | 2026-12-06 | 2026-12-09 | CON-LEG101-BR-1140, CON-LEG101-BR-1240, CON-LEG101-BR-1060 | 8d |
| CON-LEG101-BR-1070 |  | Steel Reinforced Work for Apron Slab | 15d | 2026-12-10 | 2026-12-27 | CON-LEG101-BR-1250, CON-LEG101-BR-1060, CON-LEG101-EN-1210, CON-LEG101-EN-1220 | 8d |
| CON-LEG101-BR-1080 |  | Formwork Work for Apron Slab | 15d | 2026-12-28 | 2027-01-13 | CON-LEG101-BR-1250, CON-LEG101-BR-1070 | 8d |
| CON-LEG101-BR-1090 |  | Casting Concrete Work & Treatment for Apron Slab | 6d | 2027-01-14 | 2027-01-20 | CON-LEG101-BR-1080 | 12d |
|  | 3 | **Bridge Finishing** |  | 2027-01-26 | 2027-06-01 |  |  |
| CON-LEG101-BR-1150 |  | Installation of New Jersey [Bridge ] | 20d | 2027-01-26 | 2027-02-23 | CON-LEG101-PR-2420, CON-LEG101-BR-1090, CON-LEG101-PR-2170, CON-LEG101-EN-1230, CON-LEG101-BR-1230 | 8d |
| CON-LEG101-BR-1160 |  | Membrane waterproofing for concert in touch with soil and membrane waterproofing for bridge slab [Bridge ] | 10d | 2027-02-24 | 2027-03-07 | CON-LEG101-BR-1150 | 8d |
| CON-LEG101-BR-1270 |  | Installation of Lighting poles [Bridge ] | 18d | 2027-03-03 | 2027-03-23 | CON-LEG101-BR-1060, CON-LEG101-BR-1150, CON-LEG101-LR-8170 | 24d |
| CON-LEG101-BR-1170 |  | Placing of Protective Coating for Concrete Surfaces [Bridge ] | 13d | 2027-03-08 | 2027-03-22 | CON-LEG101-BR-1160 | 8d |
| CON-LEG101-BR-1260 |  | Asphalt Wearing Cource | 3d | 2027-03-23 | 2027-03-25 | CON-LEG101-BR-1170 | 8d |
| CON-LEG101-BR-1190 |  | Installation of expansion joints for bridges [Bridge ] | 14d | 2027-03-27 | 2027-04-11 | CON-LEG101-BR-1260, CON-LEG101-BR-1180, CON-LEG101-PR-2250 | 8d |
| CON-LEG101-BR-1200 |  | Installation of Guard Rail [Bridge ] | 20d | 2027-04-12 | 2027-05-04 | CON-LEG101-BR-1260, CON-LEG101-BR-1270, CON-LEG101-BR-1190, CON-LEG101-PR-2290 | 8d |
| CON-LEG101-BR-1210 |  | Installation of GRP Panel [Bridge ] | 10d | 2027-05-05 | 2027-05-20 | CON-LEG101-BR-1260, CON-LEG101-BR-1200, CON-LEG101-PR-2330 | 8d |
| CON-LEG101-BR-1220 |  | Installation of Logo MODON [Bridge ] | 10d | 2027-05-22 | 2027-06-01 | CON-LEG101-PR-2430, CON-LEG101-BR-1260, CON-LEG101-BR-1210, CON-LEG101-PR-2360 | 8d |
|  | 4 | **Drainage** |  | 2027-01-14 | 2027-01-25 |  |  |
|  | 1 | **Gully Installation** |  | 2027-01-14 | 2027-01-25 |  |  |
| CON-LEG101-BR-1230 |  | Installation of Bridge Gully (Scupper) drainage units [Bridge ] | 10d | 2027-01-14 | 2027-01-25 | CON-LEG101-PR-2410, CON-LEG101-BR-1060, CON-LEG101-PR-2390, CON-LEG101-BR-1080 | 8d |
|  | 4 | **Outside Boundary Area (Tie-in Lines)** |  | 2026-01-01 | 2027-05-04 |  |  |
|  | 1 | **Permits & Prepation works for Construction** |  | 2026-01-01 | 2026-04-14 |  |  |
| CON-LEG101-OBA-1230 |  | Permits for Starting Works | 20d | 2026-01-01 | 2026-01-24 | CON-LEG101-MS-1070, CON-LEG101-EN-1770, CON-LEG101-EN-1720, CON-LEG101-EN-1740, CON-LEG101-EN-1690, CON-LEG101-EN-1710 | 7d |
| CON-LEG101-OBA-1240 |  | As Built for Existing Utilites | 21d | 2026-01-25 | 2026-02-17 | CON-LEG101-OBA-1230 | 7d |
| CON-LEG101-OBA-1250 |  | Submission of Engineering Works | 21d | 2026-02-18 | 2026-03-15 | CON-LEG101-OBA-1240 | 7d |
| CON-LEG101-OBA-1260 |  | Approval of Engineering Works | 12d | 2026-03-16 | 2026-04-02 | CON-LEG101-OBA-1250 | 7d |
| CON-LEG101-OBA-1270 |  | Detour & Safety works | 10d | 2026-04-04 | 2026-04-14 | CON-LEG101-OBA-1260 | 7d |
|  | 4 | **Sanitary Sewerage** |  | 2026-04-15 | 2026-10-06 |  |  |
|  | 2 | **Pipe Work** |  | 2026-04-15 | 2026-09-10 |  |  |
| CON-LEG101-OBA-1080 |  | Excavation for Sanitary Sewerage Network [Outside Boundary Area ] | 21d | 2026-04-15 | 2026-05-09 | CON-LEG101-OBA-1270, CON-LEG101-SD-1000, CON-LEG101-SD-1010, CON-LEG101-SD-1020, CON-LEG101-SD-1030, CON-LEG101-EN-1750, CON-LEG101-EN-1760, CON-LEG101-EN-1770, CON-LEG101-EN-3440 | 16d |
| CON-LEG101-OBA-1090 |  | Granular bedding for Sanitary Sewerage Network [Outside Boundary Area ] | 18d | 2026-05-10 | 2026-06-03 | CON-LEG101-PR-2560, CON-LEG101-OBA-1080 | 16d |
| CON-LEG101-OBA-1100 |  | Installation of Pipe for Sanitary Sewerage Network [Outside Boundary Area ] | 21d | 2026-06-04 | 2026-06-28 | CON-LEG101-PR-2560, CON-LEG101-OBA-1090, CON-LEG101-PR-1720 | 16d |
| CON-LEG101-OBA-1110 |  | Testing for Sanitary Sewerage Network [Outside Boundary Area ] | 21d | 2026-06-29 | 2026-07-22 | CON-LEG101-OBA-1100 | 16d |
| CON-LEG101-OBA-1120 |  | Granular Surround for Sanitary Sewerage Network [Outside Boundary Area ] | 18d | 2026-07-23 | 2026-08-12 | CON-LEG101-OBA-1110, CON-LEG101-EN-3450 | 16d |
| CON-LEG101-OBA-1130 |  | Installation of Micron Marker Magnetic Tape [Outside Boundary Area ] | 7d | 2026-08-13 | 2026-08-20 | CON-LEG101-OBA-1120 | 16d |
| CON-LEG101-OBA-1140 |  | Backfilling to Subgrade Elevation [Outside Boundary Area ] | 18d | 2026-08-22 | 2026-09-10 | CON-LEG101-OBA-1130, CON-LEG101-EN-3440 | 16d |
|  | 1 | **Manhole** |  | 2026-09-12 | 2026-10-06 |  |  |
| CON-LEG101-OBA-1150 |  | Installation of Fiberglass Manholes [Outside Boundary Area ] | 21d | 2026-09-12 | 2026-10-06 | CON-LEG101-PR-2570, CON-LEG101-OBA-1090, CON-LEG101-PR-1750, CON-LEG101-OBA-1140 | 16d |
|  | 3 | **TSE Network** |  | 2026-10-10 | 2026-12-22 |  |  |
|  | 2 | **Pipe Work** |  | 2026-10-10 | 2026-12-21 |  |  |
| CON-LEG101-OBA-1000 |  | Excavation for TSE Network [Outside Boundary Area ] | 10d | 2026-10-10 | 2026-10-20 | CON-LEG101-OBA-1270, CON-LEG101-LR-2070, CON-LEG101-EN-1720, CON-LEG101-EN-1730, CON-LEG101-EN-1740, CON-LEG101-EN-1810, CON-LEG101-OBA-1150 | 14d |
| CON-LEG101-OBA-1010 |  | Granular bedding for TSE Network [Outside Boundary Area ] | 8d | 2026-10-21 | 2026-10-29 | CON-LEG101-OBA-1000 | 14d |
| CON-LEG101-OBA-1020 |  | Installation of Pipe for TSE Network [Outside Boundary Area ] | 11d | 2026-10-31 | 2026-11-11 | CON-LEG101-PR-2590, CON-LEG101-OBA-1010, CON-LEG101-PR-1690 | 14d |
| CON-LEG101-OBA-1030 |  | Testing for TSE Network [Outside Boundary Area ] | 8d | 2026-11-12 | 2026-11-21 | CON-LEG101-OBA-1020 | 14d |
| CON-LEG101-OBA-1040 |  | Granular Surround for TSE Network [Outside Boundary Area ] | 8d | 2026-11-22 | 2026-11-30 | CON-LEG101-OBA-1030, CON-LEG101-EN-3450 | 14d |
| CON-LEG101-OBA-1050 |  | Installation of Micron Marker Magnetic Tape [Outside Boundary Area ] | 3d | 2026-12-01 | 2026-12-03 | CON-LEG101-OBA-1040 | 14d |
| CON-LEG101-OBA-1060 |  | Backfilling to Subgrade Elevation [Outside Boundary Area ] | 15d | 2026-12-05 | 2026-12-21 | CON-LEG101-OBA-1050, CON-LEG101-EN-3440 | 14d |
|  | 1 | **Valves/Chamber** |  | 2026-12-05 | 2026-12-22 |  |  |
| CON-LEG101-OBA-1500 |  | Installation of Valve Chamber [Outside Boundary Area ] | 10d | 2026-12-05 | 2026-12-15 | CON-LEG101-OBA-1020, CON-LEG101-OBA-1060 SS | 14d |
| CON-LEG101-OBA-1070 |  | Installation of Butterfly valves (In Chamber) [Outside Boundary Area ] | 6d | 2026-12-16 | 2026-12-22 | CON-LEG101-OBA-1500, CON-LEG101-OBA-1020, CON-LEG101-PR-1970 | 14d |
|  | 5 | **Public Water Utility Distribution** |  | 2026-04-15 | 2027-05-04 |  |  |
|  | 3 | **Public Water Utility Distribution (0 - 900) m** |  | 2026-04-15 | 2026-08-04 |  |  |
|  | 2 | **Pipe Work** |  | 2026-04-15 | 2026-08-04 |  |  |
| CON-LEG101-OBA-1160 |  | Excavation for Public Water Utility Distribution Piping [Outside Boundary Area ] 0 - 900 m | 21d | 2026-04-15 | 2026-05-09 | CON-LEG101-OBA-1270, CON-LEG101-EN-1690, CON-LEG101-EN-1700, CON-LEG101-EN-1710, CON-LEG101-EN-3440 | 7d |
| CON-LEG101-OBA-1170 |  | Granular bedding for Public Water Utility Distribution Piping [Outside Boundary Area ] 0 - 900 m | 13d | 2026-05-10 | 2026-05-24 | CON-LEG101-OBA-1160 | 7d |
| CON-LEG101-OBA-1180 |  | Installation of Pipe for Public Water Utility Distribution Piping [Outside Boundary Area ] 0 - 900 m | 19d | 2026-05-25 | 2026-06-20 | CON-LEG101-PR-4010, CON-LEG101-OBA-1170, CON-LEG101-PR-1660 | 7d |
| CON-LEG101-OBA-1190 |  | Testing for Public Water Utility Distribution Piping [Outside Boundary Area ] 0 - 900 m | 13d | 2026-06-21 | 2026-07-05 | CON-LEG101-OBA-1180 | 7d |
| CON-LEG101-OBA-1200 |  | Granular Surround for Public Water Utility Distribution Piping [Outside Boundary Area ] 0 - 900 m | 13d | 2026-07-06 | 2026-07-20 | CON-LEG101-OBA-1190, CON-LEG101-EN-3450 | 7d |
| CON-LEG101-OBA-1210 |  | Installation of Micron Marker Magnetic Tape [Outside Boundary Area ] 0 - 900 m | 3d | 2026-07-21 | 2026-07-23 | CON-LEG101-OBA-1200 | 7d |
| CON-LEG101-OBA-1220 |  | Backfilling to Subgrade Elevation [Outside Boundary Area ] 0 - 900 m | 10d | 2026-07-25 | 2026-08-04 | CON-LEG101-OBA-1210, CON-LEG101-EN-3440 | 7d |

| ID | WBS | Task | Duration | Start | Finish | Predecessors | Total float |
| --- | --- | --- | --- | --- | --- | --- | --- |
|  | 1 | **Valves/Chamber** |  | 2026-06-21 | 2026-07-26 |  |  |
| CON-LEG101-OBA-1420 |  | Installation of Air Valve chambers [Outside Boundary Area ] 0 - 900 m | 21d | 2026-06-21 | 2026-07-14 | CON-LEG101-OBA-1180 | 15d |
| CON-LEG101-OBA-1430 |  | Installation of Air Valves [Outside Boundary Area ] 0 - 900 m | 10d | 2026-07-15 | 2026-07-26 | CON-LEG101-OBA-1420 | 15d |
|  | 1 | **Public Water Utility Distribution (901 - 1800) m** |  | 2026-08-05 | 2026-12-23 |  |  |
| CON-LEG101-OBA-1460 |  | Permits for Starting Works for Area 901 - 1800 m | 12d | 2026-08-05 | 2026-08-18 | CON-LEG101-OBA-1420, CON-LEG101-OBA-1220, CON-LEG101-OBA-1430 | 7d |
| CON-LEG101-OBA-1470 |  | Detour & Safety works for Area 901 - 1800 m | 8d | 2026-08-19 | 2026-08-27 | CON-LEG101-OBA-1460 | 7d |
|  | 2 | **Pipe Work** |  | 2026-08-29 | 2026-12-16 |  |  |
| CON-LEG101-OBA-1280 |  | Excavation for Public Water Utility Distribution Piping [Outside Boundary Area ] 901 - 1800 m | 21d | 2026-08-29 | 2026-09-21 | CON-LEG101-OBA-1460, CON-LEG101-OBA-1470 | 7d |
| CON-LEG101-OBA-1290 |  | Granular bedding for Public Water Utility Distribution Piping [Outside Boundary Area ] 901 - 1800 m | 13d | 2026-09-22 | 2026-10-07 | CON-LEG101-OBA-1280 | 7d |
| CON-LEG101-OBA-1300 |  | Installation of Pipe for Public Water Utility Distribution Piping [Outside Boundary Area ] 901 - 1800 m | 21d | 2026-10-08 | 2026-11-01 | CON-LEG101-OBA-1290 | 7d |
| CON-LEG101-OBA-1310 |  | Testing for Public Water Utility Distribution Piping [Outside Boundary Area ] 901 - 1800 m | 13d | 2026-11-02 | 2026-11-16 | CON-LEG101-OBA-1300 | 7d |
| CON-LEG101-OBA-1320 |  | Granular Surround for Public Water Utility Distribution Piping [Outside Boundary Area ] 901 - 1800 m | 13d | 2026-11-17 | 2026-12-01 | CON-LEG101-OBA-1310 | 7d |
| CON-LEG101-OBA-1330 |  | Installation of Micron Marker Magnetic Tape [Outside Boundary Area ] 901 - 1800 m | 3d | 2026-12-02 | 2026-12-05 | CON-LEG101-OBA-1320 | 7d |
| CON-LEG101-OBA-1340 |  | Backfilling to Subgrade Elevation [Outside Boundary Area ] 901 - 1800 m | 10d | 2026-12-06 | 2026-12-16 | CON-LEG101-OBA-1330 | 7d |
|  | 1 | **Valves/Chamber** |  | 2026-11-02 | 2026-12-23 |  |  |
| CON-LEG101-OBA-1440 |  | Installation of Air Valve chambers [Outside Boundary Area ] 901 - 1800 m | 21d | 2026-11-02 | 2026-11-25 | CON-LEG101-OBA-1300 | 15d |
| CON-LEG101-OBA-1450 |  | Installation of Air Valves [Outside Boundary Area ] 901 - 1800 m | 10d | 2026-11-26 | 2026-12-07 | CON-LEG101-OBA-1440 | 15d |
| CON-LEG101-OBA-1510 |  | Installation of Butterfly valves, on pipe with diameter 400 mm | 6d | 2026-12-17 | 2026-12-23 | CON-LEG101-OBA-1340, CON-LEG101-OBA-1450 | 7d |
|  | 2 | **Public Water Utility Distribution (1801 - 2780) m** |  | 2026-12-24 | 2027-05-04 |  |  |
| CON-LEG101-OBA-1490 |  | Permits for Starting Works for Area 1800 - 2780 m | 12d | 2026-12-24 | 2027-01-06 | CON-LEG101-OBA-1440, CON-LEG101-OBA-1340, CON-LEG101-OBA-1070 SS, CON-LEG101-OBA-1510 | 7d |
| CON-LEG101-OBA-1480 |  | Detour & Safety works for Area 1800 - 2780 m | 8d | 2027-01-07 | 2027-01-16 | CON-LEG101-OBA-1490 | 7d |
|  | 2 | **Pipe Work** |  | 2027-01-17 | 2027-05-04 |  |  |
| CON-LEG101-OBA-1350 |  | Excavation for Public Water Utility Distribution Piping [Outside Boundary Area ] 1800 - 2780 m | 15d | 2027-01-17 | 2027-02-02 | CON-LEG101-OBA-1480 | 7d |
| CON-LEG101-OBA-1360 |  | Granular bedding for Public Water Utility Distribution Piping [Outside Boundary Area ] 1800 - 2780 m | 13d | 2027-02-03 | 2027-02-23 | CON-LEG101-OBA-1350 | 7d |
| CON-LEG101-OBA-1370 |  | Installation of Pipe for Public Water Utility Distribution Piping [Outside Boundary Area ] 1800 - 2780 m | 21d | 2027-02-24 | 2027-03-20 | CON-LEG101-OBA-1360 | 7d |
| CON-LEG101-OBA-1380 |  | Testing for Public Water Utility Distribution Piping [Outside Boundary Area ] 1800 - 2780 m | 13d | 2027-03-21 | 2027-04-04 | CON-LEG101-OBA-1370 | 7d |
| CON-LEG101-OBA-1390 |  | Granular Surround for Public Water Utility Distribution Piping [Outside Boundary Area ] 1800 - 2780 m | 13d | 2027-04-05 | 2027-04-19 | CON-LEG101-OBA-1380 | 7d |
| CON-LEG101-OBA-1400 |  | Installation of Micron Marker Magnetic Tape [Outside Boundary Area ] 1800 - 2780 m | 3d | 2027-04-20 | 2027-04-22 | CON-LEG101-OBA-1390 | 7d |
| CON-LEG101-OBA-1410 |  | Backfilling to Subgrade Elevation [Outside Boundary Area ] 1800 - 2780 m | 10d | 2027-04-24 | 2027-05-04 | CON-LEG101-OBA-1400 | 7d |
|  | 8 | **Roads Finishing** |  | 2027-01-25 | 2027-08-03 |  |  |
|  | 1 | **Local – 01** |  | 2027-02-20 | 2027-07-20 |  |  |
|  | 1 | **LOCAL - 01 Segment-01 (From 0+000 to 1+066)** |  | 2027-02-20 | 2027-05-30 |  |  |
|  | 7 | **Concrete Curb** |  | 2027-02-20 | 2027-03-13 |  |  |
| CON-LEG101-LR-6180 |  | Installation of Precast Concrete Curb [Local – 01 Segment-01] | 18d | 2027-02-20 | 2027-03-13 | CON-LEG101-LR-5880, CON-LEG101-LR-2070, CON-LEG101-LR-10740, CON-LEG101-LR-8080, CON-LEG101-LR-7880, CON-LEG101-LR-2470, CON-LEG101-LR-9340, CON-LEG101-LR-8290, CON-LEG101-PR-1320, CON-LEG101-PR-1930, CON-LEG101-LR-7980, CON-LEG101-PR-2550, CON-LEG101-PR-1540 | 6d |
|  | 1 | **Asphalt Wearing Course** |  | 2027-03-14 | 2027-03-27 |  |  |
| CON-LEG101-LR-5980 |  | Tack coat (RC2) [Local – 01 Segment-01] | 6d | 2027-03-14 | 2027-03-20 | CON-LEG101-LR-6180, CON-LEG101-LR-5880 | 12d |
| CON-LEG101-LR-6080 |  | Bituminous wearing course [Local – 01 Segment-01] | 6d | 2027-03-21 | 2027-03-27 | CON-LEG101-LR-5980, CON-LEG101-PR-1510, CON-LEG101-EN-3470 | 12d |
|  | 3 | **Interlocking block roads/on-street parking** |  | 2027-03-28 | 2027-04-18 |  |  |
| CON-LEG101-LR-6380 |  | Interlocking block pavers for roads/on-street parking [Local – 01 Segment-01] | 19d | 2027-03-28 | 2027-04-18 | CON-LEG101-LR-6180, CON-LEG101-LR-6080, CON-LEG101-EN-3450, CON-LEG101-MS-1140, CON-LEG101-MS-1140 FF | 12d |
|  | 4 | **Interlocking block sidewalk/footpath** |  | 2027-04-19 | 2027-05-10 |  |  |
| CON-LEG101-LR-6280 |  | Interlocking block pavers for sidewalk/footpath [Local – 01 Segment-01] | 19d | 2027-04-19 | 2027-05-10 | CON-LEG101-LR-6180, CON-LEG101-LR-6380, CON-LEG101-PR-1570 | 12d |
|  | 5 | **Pavement Markings** |  | 2027-04-05 | 2027-04-22 |  |  |
| CON-LEG101-LR-6580 |  | Pavement Markings (White Paint/Yellow Paint) [Local – 01 Segment-01] | 6d | 2027-04-05 | 2027-04-11 | CON-LEG101-PR-2070, CON-LEG101-LR-6180 SS, CON-LEG101-LR-6080, CON-LEG101-PR-1600 | 14d |
| CON-LEG101-LR-6680 |  | Handicap ramp [Local – 01 Segment-01] | 10d | 2027-04-12 | 2027-04-22 | CON-LEG101-LR-6580, CON-LEG101-PR-2600 | 14d |
|  | 6 | **Traffic Signs** |  | 2027-04-24 | 2027-05-30 |  |  |
| CON-LEG101-LR-6480 |  | Retroreflective Plastic Cones [Local – 01 Segment-01] | 9d | 2027-04-24 | 2027-05-03 | CON-LEG101-PR-2060, CON-LEG101-LR-6680, CON-LEG101-PR-1630 | 14d |
| CON-LEG101-LR-6780 |  | Installation of Traffic Signs [Local – 01 Segment-01] | 19d | 2027-05-04 | 2027-05-30 | CON-LEG101-PR-2060, CON-LEG101-LR-6480, CON-LEG101-PR-1630 | 14d |
|  | 2 | **LOCAL - 01 Segment-02 (From 1+066 to 2+133)** |  | 2027-03-14 | 2027-06-23 |  |  |
|  | 7 | **Concrete Curb** |  | 2027-03-14 | 2027-04-05 |  |  |
| CON-LEG101-LR-6190 |  | Installation of Precast Concrete Curb [Local – 01 Segment-02] | 20d | 2027-03-14 | 2027-04-05 | CON-LEG101-LR-5890, CON-LEG101-LR-2090, CON-LEG101-LR-10750, CON-LEG101-LR-7890, CON-LEG101-LR-8090, CON-LEG101-LR-2480, CON-LEG101-LR-9350, CON-LEG101-LR-8300, CON-LEG101-LR-6180, CON-LEG101-PR-1320, CON-LEG101-LR-7990, CON-LEG101-PR-1930, CON-LEG101-PR-1540 | 6d |
|  | 1 | **Asphalt Wearing Course** |  | 2027-04-06 | 2027-04-19 |  |  |
| CON-LEG101-LR-5990 |  | Tack coat (RC2) [Local – 01 Segment-02] | 6d | 2027-04-06 | 2027-04-12 | CON-LEG101-LR-6190, CON-LEG101-LR-5890, CON-LEG101-LR-6080 | 15d |
| CON-LEG101-LR-6090 |  | Bituminous wearing course [Local – 01 Segment-02] | 6d | 2027-04-13 | 2027-04-19 | CON-LEG101-LR-5990, CON-LEG101-PR-1510, CON-LEG101-EN-3470 | 15d |
|  | 3 | **Interlocking block roads/on-street parking** |  | 2027-05-11 | 2027-05-26 |  |  |
| CON-LEG101-LR-6390 |  | Interlocking block pavers for roads/on-street parking [Local – 01 Segment-02] | 10d | 2027-05-11 | 2027-05-26 | CON-LEG101-LR-6190, CON-LEG101-LR-6090, CON-LEG101-EN-3450, CON-LEG101-LR-6280 | 12d |
|  | 4 | **Interlocking block sidewalk/footpath** |  | 2027-05-27 | 2027-06-07 |  |  |
| CON-LEG101-LR-6290 |  | Interlocking block pavers for sidewalk/footpath [Local – 01 Segment-02] | 10d | 2027-05-27 | 2027-06-07 | CON-LEG101-LR-6190, CON-LEG101-LR-6390, CON-LEG101-PR-1570 | 12d |
|  | 5 | **Pavement Markings** |  | 2027-04-12 | 2027-05-10 |  |  |
| CON-LEG101-LR-6590 |  | Pavement Markings (White Paint/Yellow Paint) [Local – 01 Segment-02] | 15d | 2027-04-12 | 2027-04-28 | CON-LEG101-PR-2070, CON-LEG101-LR-6190, CON-LEG101-PR-1600, CON-LEG101-LR-6580 | 15d |
| CON-LEG101-LR-6690 |  | Handicap ramp [Local – 01 Segment-02] | 10d | 2027-04-29 | 2027-05-10 | CON-LEG101-LR-6590, CON-LEG101-PR-2600, CON-LEG101-LR-6680 | 15d |
|  | 6 | **Traffic Signs** |  | 2027-05-11 | 2027-06-23 |  |  |
| CON-LEG101-LR-6490 |  | Retroreflective Plastic Cones [Local – 01 Segment-02] | 12d | 2027-05-11 | 2027-05-29 | CON-LEG101-PR-2060, CON-LEG101-LR-6690, CON-LEG101-PR-1630, CON-LEG101-LR-6480 | 15d |
| CON-LEG101-LR-6790 |  | Installation of Traffic Signs [Local – 01 Segment-02] | 21d | 2027-05-31 | 2027-06-23 | CON-LEG101-PR-2060, CON-LEG101-LR-6490, CON-LEG101-PR-1630, CON-LEG101-LR-6780 | 14d |
|  | 3 | **LOCAL - 01 Segment-03 (From 2+133 to 3+200)** |  | 2027-04-06 | 2027-07-20 |  |  |
|  | 7 | **Concrete Curb** |  | 2027-04-06 | 2027-04-29 |  |  |
| CON-LEG101-LR-6200 |  | Installation of Precast Concrete Curb [Local – 01 Segment-03] | 21d | 2027-04-06 | 2027-04-29 | CON-LEG101-LR-5900, CON-LEG101-LR-2100, CON-LEG101-LR-10760, CON-LEG101-LR-7900, CON-LEG101-LR-8000, CON-LEG101-LR-8100, CON-LEG101-LR-8300, CON-LEG101-LR-9350, CON-LEG101-LR-2480, CON-LEG101-LR-6190, CON-LEG101-PR-1540 | 6d |
|  | 1 | **Asphalt Wearing Course** |  | 2027-05-01 | 2027-05-09 |  |  |
| CON-LEG101-LR-6000 |  | Tack coat (RC2) [Local – 01 Segment-03] | 4d | 2027-05-01 | 2027-05-04 | CON-LEG101-LR-6200, CON-LEG101-LR-5900, CON-LEG101-LR-6090 | 6d |
| CON-LEG101-LR-6100 |  | Bituminous wearing course [Local – 01 Segment-03] | 4d | 2027-05-05 | 2027-05-09 | CON-LEG101-LR-6000, CON-LEG101-PR-1510, CON-LEG101-EN-3470 | 6d |
|  | 3 | **Interlocking block roads/on-street parking** |  | 2027-06-08 | 2027-06-28 |  |  |

| ID | WBS | Task | Duration | Start | Finish | Predecessors | Total float |
| --- | --- | --- | --- | --- | --- | --- | --- |
| CON-LEG101-LR-6400 |  | Interlocking block pavers for roads/on-street parking [Local – 01 Segment-03] | 18d | 2027-06-08 | 2027-06-28 | CON-LEG101-LR-6200, CON-LEG101-LR-6100, CON-LEG101-LR-5700 SS, CON-LEG101-EN-3450, CON-LEG101-LR-6290 | 12d |
|  | 4 | **Interlocking block sidewalk/footpath** |  | 2027-06-29 | 2027-07-20 |  |  |
| CON-LEG101-LR-6300 |  | Interlocking block pavers for sidewalk/footpath [Local – 01 Segment-03] | 19d | 2027-06-29 | 2027-07-20 | CON-LEG101-LR-6200, CON-LEG101-LR-6400, CON-LEG101-PR-1570 | 12d |
|  | 5 | **Pavement Markings** |  | 2027-05-01 | 2027-05-30 |  |  |
| CON-LEG101-LR-6600 |  | Pavement Markings (White Paint/Yellow Paint) [Local – 01 Segment-03] | 10d | 2027-05-01 | 2027-05-11 | CON-LEG101-PR-2070, CON-LEG101-LR-6200, CON-LEG101-PR-1600, CON-LEG101-LR-6590 | 15d |
| CON-LEG101-LR-6700 |  | Handicap ramp [Local – 01 Segment-03] | 12d | 2027-05-12 | 2027-05-30 | CON-LEG101-LR-6600, CON-LEG101-PR-2600, CON-LEG101-LR-6690 | 15d |
|  | 6 | **Traffic Signs** |  | 2027-05-31 | 2027-07-18 |  |  |
| CON-LEG101-LR-6500 |  | Retroreflective Plastic Cones [Local – 01 Segment-03] | 20d | 2027-05-31 | 2027-06-22 | CON-LEG101-PR-2060, CON-LEG101-LR-6700, CON-LEG101-PR-1630, CON-LEG101-LR-6490 | 15d |
| CON-LEG101-LR-6800 |  | Installation of Traffic Signs [Local – 01 Segment-03] | 21d | 2027-06-24 | 2027-07-18 | CON-LEG101-PR-2060, CON-LEG101-LR-6500, CON-LEG101-PR-1630, CON-LEG101-LR-6790 | 14d |
|  | 2 | **Local – 02** |  | 2027-01-25 | 2027-07-14 |  |  |
|  | 7 | **Concrete Curb** |  | 2027-01-25 | 2027-02-15 |  |  |
| CON-LEG101-LR-6210 |  | Installation of Precast Concrete Curb [Local – 02 ] | 15d | 2027-01-25 | 2027-02-15 | CON-LEG101-LR-5910, CON-LEG101-LR-2110, CON-LEG101-LR-10770, CON-LEG101-LR-7910, CON-LEG101-LR-8110, CON-LEG101-LR-2490, CON-LEG101-LR-9360, CON-LEG101-LR-8310, CON-LEG101-PR-1540 | 0d |
|  | 1 | **Asphalt Wearing Course** |  | 2027-05-10 | 2027-05-19 |  |  |
| CON-LEG101-LR-6010 |  | Tack coat (RC2) [Local – 02 ] | 2d | 2027-05-10 | 2027-05-11 | CON-LEG101-LR-6210, CON-LEG101-LR-5910, CON-LEG101-LR-6100 | 6d |
| CON-LEG101-LR-6110 |  | Bituminous wearing course [Local – 02 ] | 3d | 2027-05-12 | 2027-05-19 | CON-LEG101-LR-6010, CON-LEG101-PR-1510, CON-LEG101-EN-3470 | 6d |
|  | 3 | **Interlocking block roads/on-street parking** |  | 2027-05-20 | 2027-06-13 |  |  |
| CON-LEG101-LR-6410 |  | Interlocking block pavers for roads/on-street parking [Local – 02 ] | 21d | 2027-05-20 | 2027-06-13 | CON-LEG101-LR-6210, CON-LEG101-LR-6110, CON-LEG101-LR-5710, CON-LEG101-EN-3450 | 23d |
|  | 4 | **Interlocking block sidewalk/footpath** |  | 2027-06-14 | 2027-07-07 |  |  |
| CON-LEG101-LR-6310 |  | Interlocking block pavers for sidewalk/footpath [Local – 02 ] | 21d | 2027-06-14 | 2027-07-07 | CON-LEG101-LR-6210, CON-LEG101-LR-6410, CON-LEG101-PR-1570 | 23d |
|  | 5 | **Pavement Markings** |  | 2027-05-12 | 2027-06-08 |  |  |
| CON-LEG101-LR-6610 |  | Pavement Markings (White Paint/Yellow Paint) [Local – 02 ] | 10d | 2027-05-12 | 2027-05-27 | CON-LEG101-PR-2070, CON-LEG101-LR-6210, CON-LEG101-PR-1600, CON-LEG101-LR-6600 | 17d |
| CON-LEG101-LR-6710 |  | Handicap ramp [Local – 02 ] | 10d | 2027-05-29 | 2027-06-08 | CON-LEG101-LR-6610, CON-LEG101-PR-2600 | 17d |
|  | 6 | **Traffic Signs** |  | 2027-06-09 | 2027-07-14 |  |  |
| CON-LEG101-LR-6510 |  | Retroreflective Plastic Cones [Local – 02 ] | 10d | 2027-06-09 | 2027-06-20 | CON-LEG101-PR-2060, CON-LEG101-LR-6710, CON-LEG101-PR-1630 | 17d |
| CON-LEG101-LR-6810 |  | Installation of Traffic Signs [Local – 02 ] | 21d | 2027-06-21 | 2027-07-14 | CON-LEG101-PR-2060, CON-LEG101-LR-6510, CON-LEG101-PR-1630 | 17d |
|  | 3 | **Local – 03** |  | 2027-02-16 | 2027-07-22 |  |  |
|  | 7 | **Concrete Curb** |  | 2027-02-16 | 2027-03-13 |  |  |
| CON-LEG101-LR-6220 |  | Installation of Precast Concrete Curb [Local – 03 ] | 21d | 2027-02-16 | 2027-03-13 | CON-LEG101-LR-5920, CON-LEG101-LR-2120, CON-LEG101-LR-10780, CON-LEG101-LR-7920, CON-LEG101-LR-8120, CON-LEG101-LR-2500, CON-LEG101-LR-9370, CON-LEG101-LR-6210, CON-LEG101-PR-1540 | 0d |
|  | 1 | **Asphalt Wearing Course** |  | 2027-05-20 | 2027-05-25 |  |  |
| CON-LEG101-LR-6020 |  | Tack coat (RC2) [Local – 03 ] | 2d | 2027-05-20 | 2027-05-22 | CON-LEG101-LR-6220, CON-LEG101-LR-5920, CON-LEG101-LR-6110 | 6d |
| CON-LEG101-LR-6120 |  | Bituminous wearing course [Local – 03 ] | 3d | 2027-05-23 | 2027-05-25 | CON-LEG101-LR-6020, CON-LEG101-PR-1510, CON-LEG101-EN-3470 | 6d |
|  | 3 | **Interlocking block roads/on-street parking** |  | 2027-05-26 | 2027-06-19 |  |  |
| CON-LEG101-LR-6420 |  | Interlocking block pavers for roads/on-street parking [Local – 03 ] | 21d | 2027-05-26 | 2027-06-19 | CON-LEG101-LR-6220, CON-LEG101-LR-6120, CON-LEG101-LR-5720, CON-LEG101-EN-3450 | 18d |
|  | 4 | **Interlocking block sidewalk/footpath** |  | 2027-06-20 | 2027-07-13 |  |  |
| CON-LEG101-LR-6320 |  | Interlocking block pavers for sidewalk/footpath [Local – 03 ] | 21d | 2027-06-20 | 2027-07-13 | CON-LEG101-LR-6220, CON-LEG101-LR-6420, CON-LEG101-PR-1570 | 18d |
|  | 5 | **Pavement Markings** |  | 2027-05-26 | 2027-06-17 |  |  |
| CON-LEG101-LR-6620 |  | Pavement Markings (White Paint/Yellow Paint) [Local – 03 ] | 10d | 2027-05-26 | 2027-06-06 | CON-LEG101-PR-2070, CON-LEG101-LR-6220, CON-LEG101-LR-6120, CON-LEG101-PR-1600 | 10d |
| CON-LEG101-LR-6720 |  | Handicap ramp [Local – 03 ] | 10d | 2027-06-07 | 2027-06-17 | CON-LEG101-LR-6620, CON-LEG101-PR-2600 | 10d |
|  | 6 | **Traffic Signs** |  | 2027-06-19 | 2027-07-22 |  |  |
| CON-LEG101-LR-6520 |  | Retroreflective Plastic Cones [Local – 03 ] | 10d | 2027-06-19 | 2027-06-29 | CON-LEG101-PR-2060, CON-LEG101-LR-6720, CON-LEG101-PR-1630 | 10d |
| CON-LEG101-LR-6820 |  | Installation of Traffic Signs [Local – 03 ] | 20d | 2027-06-30 | 2027-07-22 | CON-LEG101-PR-2060, CON-LEG101-LR-6520, CON-LEG101-PR-1630 | 10d |
|  | 4 | **Local – 04** |  | 2027-03-14 | 2027-07-21 |  |  |
|  | 7 | **Concrete Curb** |  | 2027-03-14 | 2027-04-06 |  |  |
| CON-LEG101-LR-6230 |  | Installation of Precast Concrete Curb [Local – 04 ] | 21d | 2027-03-14 | 2027-04-06 | CON-LEG101-LR-5930, CON-LEG101-LR-2130, CON-LEG101-LR-10790, CON-LEG101-LR-7930, CON-LEG101-LR-8130, CON-LEG101-LR-2510, CON-LEG101-LR-9380, CON-LEG101-LR-6220, CON-LEG101-PR-1540 | 0d |
|  | 1 | **Asphalt Wearing Course** |  | 2027-05-26 | 2027-05-31 |  |  |
| CON-LEG101-LR-6030 |  | Tack coat (RC2) [Local – 04 ] | 2d | 2027-05-26 | 2027-05-27 | CON-LEG101-LR-6230, CON-LEG101-LR-5930, CON-LEG101-LR-6120 | 6d |
| CON-LEG101-LR-6130 |  | Bituminous wearing course [Local – 04 ] | 3d | 2027-05-29 | 2027-05-31 | CON-LEG101-LR-6030, CON-LEG101-PR-1510, CON-LEG101-EN-3470 | 6d |
|  | 3 | **Interlocking block roads/on-street parking** |  | 2027-06-01 | 2027-06-22 |  |  |
| CON-LEG101-LR-6430 |  | Interlocking block pavers for roads/on-street parking [Local – 04 ] | 19d | 2027-06-01 | 2027-06-22 | CON-LEG101-LR-6230, CON-LEG101-LR-6130, CON-LEG101-LR-5730, CON-LEG101-EN-3450 | 17d |
|  | 4 | **Interlocking block sidewalk/footpath** |  | 2027-06-23 | 2027-07-14 |  |  |
| CON-LEG101-LR-6330 |  | Interlocking block pavers for sidewalk/footpath [Local – 04 ] | 19d | 2027-06-23 | 2027-07-14 | CON-LEG101-LR-6230, CON-LEG101-LR-6430, CON-LEG101-PR-1570 | 17d |
|  | 5 | **Pavement Markings** |  | 2027-06-01 | 2027-06-23 |  |  |
| CON-LEG101-LR-6630 |  | Pavement Markings (White Paint/Yellow Paint) [Local – 04 ] | 10d | 2027-06-01 | 2027-06-12 | CON-LEG101-PR-2070, CON-LEG101-LR-6130, CON-LEG101-LR-6230, CON-LEG101-LR-6130 FF, CON-LEG101-PR-1600 | 11d |
| CON-LEG101-LR-6730 |  | Handicap ramp [Local – 04 ] | 10d | 2027-06-13 | 2027-06-23 | CON-LEG101-LR-6630, CON-LEG101-PR-2600 | 11d |
|  | 6 | **Traffic Signs** |  | 2027-06-24 | 2027-07-21 |  |  |
| CON-LEG101-LR-6530 |  | Retroreflective Plastic Cones [Local – 04 ] | 10d | 2027-06-24 | 2027-07-05 | CON-LEG101-PR-2060, CON-LEG101-LR-6730, CON-LEG101-PR-1630 | 11d |
| CON-LEG101-LR-6830 |  | Installation of Traffic Signs [Local – 04 ] | 14d | 2027-07-06 | 2027-07-21 | CON-LEG101-PR-2060, CON-LEG101-LR-6530, CON-LEG101-PR-1630 | 11d |
|  | 5 | **Local – 05** |  | 2027-04-07 | 2027-07-19 |  |  |
|  | 7 | **Concrete Curb** |  | 2027-04-07 | 2027-04-25 |  |  |
| CON-LEG101-LR-6240 |  | Installation of Precast Concrete Curb [Local – 05 ] | 16d | 2027-04-07 | 2027-04-25 | CON-LEG101-LR-5940, CON-LEG101-LR-2140, CON-LEG101-LR-10800, CON-LEG101-LR-7940, CON-LEG101-LR-8140, CON-LEG101-LR-2520, CON-LEG101-LR-9390, CON-LEG101-LR-6230, CON-LEG101-PR-1540 | 0d |
|  | 1 | **Asphalt Wearing Course** |  | 2027-06-01 | 2027-06-06 |  |  |
| CON-LEG101-LR-6040 |  | Tack coat (RC2) [Local – 05 ] | 2d | 2027-06-01 | 2027-06-02 | CON-LEG101-LR-6240, CON-LEG101-LR-5940, CON-LEG101-LR-6130 | 6d |
| CON-LEG101-LR-6140 |  | Bituminous wearing course [Local – 05 ] | 3d | 2027-06-03 | 2027-06-06 | CON-LEG101-LR-6040, CON-LEG101-PR-1510, CON-LEG101-EN-3470 | 6d |
|  | 3 | **Interlocking block roads/on-street parking** |  | 2027-06-07 | 2027-06-27 |  |  |
| CON-LEG101-LR-6440 |  | Interlocking block pavers for roads/on-street parking [Local – 05 ] | 18d | 2027-06-07 | 2027-06-27 | CON-LEG101-LR-6240, CON-LEG101-LR-6140, CON-LEG101-LR-5740, CON-LEG101-EN-3450 | 13d |
|  | 4 | **Interlocking block sidewalk/footpath** |  | 2027-06-28 | 2027-07-19 |  |  |
| CON-LEG101-LR-6340 |  | Interlocking block pavers for sidewalk/footpath [Local – 05 ] | 19d | 2027-06-28 | 2027-07-19 | CON-LEG101-LR-6240, CON-LEG101-LR-6440, CON-LEG101-PR-1570 | 13d |
|  | 5 | **Pavement Markings** |  | 2027-06-07 | 2027-06-29 |  |  |
| CON-LEG101-LR-6640 |  | Pavement Markings (White Paint/Yellow Paint) [Local – 05 ] | 10d | 2027-06-07 | 2027-06-17 | CON-LEG101-PR-2070, CON-LEG101-LR-6140, CON-LEG101-LR-6240, CON-LEG101-LR-6140 FF, CON-LEG101-PR-1600 | 14d |
| CON-LEG101-LR-6740 |  | Handicap ramp [Local – 05 ] | 10d | 2027-06-19 | 2027-06-29 | CON-LEG101-LR-6640, CON-LEG101-PR-2600 | 14d |

| ID | WBS | Task | Duration | Start | Finish | Predecessors | Total float |
| --- | --- | --- | --- | --- | --- | --- | --- |
|  | 6 | **Traffic Signs** |  | 2027-06-30 | 2027-07-18 |  |  |
| CON-LEG101-LR-6540 |  | Retroreflective Plastic Cones [Local – 05 ] | 5d | 2027-06-30 | 2027-07-05 | CON-LEG101-PR-2060, CON-LEG101-LR-6740, CON-LEG101-PR-1630 | 14d |
| CON-LEG101-LR-6840 |  | Installation of Traffic Signs [Local – 05 ] | 11d | 2027-07-06 | 2027-07-18 | CON-LEG101-PR-2060, CON-LEG101-LR-6540, CON-LEG101-PR-1630 | 14d |
|  | 6 | **Local – 06** |  | 2027-04-26 | 2027-07-27 |  |  |
|  | 7 | **Concrete Curb** |  | 2027-04-26 | 2027-05-24 |  |  |
| CON-LEG101-LR-6250 |  | Installation of Precast Concrete Curb [Local – 06 ] | 21d | 2027-04-26 | 2027-05-24 | CON-LEG101-LR-5950, CON-LEG101-LR-2150, CON-LEG101-LR-10810, CON-LEG101-LR-7950, CON-LEG101-LR-8050, CON-LEG101-LR-8150, CON-LEG101-LR-2530, CON-LEG101-LR-9400, CON-LEG101-LR-6240, CON-LEG101-PR-1540 | 0d |
|  | 1 | **Asphalt Wearing Course** |  | 2027-06-07 | 2027-06-12 |  |  |
| CON-LEG101-LR-6050 |  | Tack coat (RC2) [Local – 06 ] | 3d | 2027-06-07 | 2027-06-09 | CON-LEG101-LR-6250, CON-LEG101-LR-5950, CON-LEG101-LR-6140 | 6d |
| CON-LEG101-LR-6150 |  | Bituminous wearing course [Local – 06 ] | 2d | 2027-06-10 | 2027-06-12 | CON-LEG101-LR-6050, CON-LEG101-PR-1510, CON-LEG101-EN-3470 | 6d |
|  | 3 | **Interlocking block roads/on-street parking** |  | 2027-06-13 | 2027-07-04 |  |  |
| CON-LEG101-LR-6450 |  | Interlocking block pavers for roads/on-street parking [Local – 06 ] | 19d | 2027-06-13 | 2027-07-04 | CON-LEG101-LR-6250, CON-LEG101-LR-6150, CON-LEG101-LR-5750, CON-LEG101-EN-3450 | 7d |
|  | 4 | **Interlocking block sidewalk/footpath** |  | 2027-07-05 | 2027-07-26 |  |  |
| CON-LEG101-LR-6350 |  | Interlocking block pavers for sidewalk/footpath [Local – 06 ] | 19d | 2027-07-05 | 2027-07-26 | CON-LEG101-LR-6250, CON-LEG101-LR-6450, CON-LEG101-PR-1570 | 7d |
|  | 5 | **Pavement Markings** |  | 2027-06-13 | 2027-07-05 |  |  |
| CON-LEG101-LR-6650 |  | Pavement Markings (White Paint/Yellow Paint) [Local – 06 ] | 10d | 2027-06-13 | 2027-06-23 | CON-LEG101-PR-2070, CON-LEG101-LR-6150, CON-LEG101-LR-6250, CON-LEG101-PR-1600 | 6d |
| CON-LEG101-LR-6750 |  | Handicap ramp [Local – 06 ] | 10d | 2027-06-24 | 2027-07-05 | CON-LEG101-LR-6650, CON-LEG101-PR-2600 | 6d |
|  | 6 | **Traffic Signs** |  | 2027-07-06 | 2027-07-27 |  |  |
| CON-LEG101-LR-6550 |  | Retroreflective Plastic Cones [Local – 06 ] | 4d | 2027-07-06 | 2027-07-10 | CON-LEG101-PR-2060, CON-LEG101-LR-6750, CON-LEG101-PR-1630 | 6d |
| CON-LEG101-LR-6850 |  | Installation of Traffic Signs [Local – 06 ] | 15d | 2027-07-11 | 2027-07-27 | CON-LEG101-PR-2060, CON-LEG101-LR-6550, CON-LEG101-PR-1630 | 6d |
|  | 7 | **Local – 07** |  | 2027-05-25 | 2027-07-21 |  |  |
|  | 7 | **Concrete Curb** |  | 2027-05-25 | 2027-06-02 |  |  |
| CON-LEG101-LR-6260 |  | Installation of Precast Concrete Curb [Local – 07 ] | 8d | 2027-05-25 | 2027-06-02 | CON-LEG101-LR-5960, CON-LEG101-LR-2160, CON-LEG101-LR-10820, CON-LEG101-LR-7960, CON-LEG101-LR-8060, CON-LEG101-LR-8160, CON-LEG101-LR-2540, CON-LEG101-LR-9410, CON-LEG101-LR-6250, CON-LEG101-PR-1540 | 0d |
|  | 1 | **Asphalt Wearing Course** |  | 2027-06-03 | 2027-06-16 |  |  |
| CON-LEG101-LR-6060 |  | Tack coat (RC2) [Local – 07 ] | 6d | 2027-06-03 | 2027-06-09 | CON-LEG101-LR-6260, CON-LEG101-LR-5960 | 11d |
| CON-LEG101-LR-6160 |  | Bituminous wearing course [Local – 07 ] | 6d | 2027-06-10 | 2027-06-16 | CON-LEG101-LR-6060, CON-LEG101-PR-1510, CON-LEG101-EN-3470 | 11d |
|  | 3 | **Interlocking block roads/on-street parking** |  | 2027-06-17 | 2027-07-04 |  |  |
| CON-LEG101-LR-6460 |  | Interlocking block pavers for roads/on-street parking [Local – 07 ] | 15d | 2027-06-17 | 2027-07-04 | CON-LEG101-LR-6260, CON-LEG101-LR-6160, CON-LEG101-LR-5760, CON-LEG101-EN-3450 | 11d |
|  | 4 | **Interlocking block sidewalk/footpath** |  | 2027-07-05 | 2027-07-21 |  |  |
| CON-LEG101-LR-6360 |  | Interlocking block pavers for sidewalk/footpath [Local – 07 ] | 15d | 2027-07-05 | 2027-07-21 | CON-LEG101-LR-6260, CON-LEG101-LR-6460, CON-LEG101-PR-1570 | 11d |
|  | 5 | **Pavement Markings** |  | 2027-06-17 | 2027-06-26 |  |  |
| CON-LEG101-LR-6660 |  | Pavement Markings (White Paint/Yellow Paint) [Local – 07 ] | 4d | 2027-06-17 | 2027-06-21 | CON-LEG101-PR-2070, CON-LEG101-LR-6160, CON-LEG101-LR-6260, CON-LEG101-LR-6160 FF, CON-LEG101-PR-1600 | 15d |
| CON-LEG101-LR-6760 |  | Handicap ramp [Local – 07 ] | 4d | 2027-06-22 | 2027-06-26 | CON-LEG101-LR-6660, CON-LEG101-PR-2600 | 15d |
|  | 6 | **Traffic Signs** |  | 2027-06-27 | 2027-07-17 |  |  |
| CON-LEG101-LR-6560 |  | Retroreflective Plastic Cones [Local – 07 ] | 4d | 2027-06-27 | 2027-06-30 | CON-LEG101-PR-2060, CON-LEG101-LR-6760, CON-LEG101-PR-1630 | 15d |
| CON-LEG101-LR-6860 |  | Installation of Traffic Signs [Local – 07 ] | 14d | 2027-07-01 | 2027-07-17 | CON-LEG101-PR-2060, CON-LEG101-LR-6560, CON-LEG101-PR-1630 | 15d |
|  | 8 | **Local – 08** |  | 2027-06-03 | 2027-08-03 |  |  |
|  | 7 | **Concrete Curb** |  | 2027-06-03 | 2027-06-19 |  |  |
| CON-LEG101-LR-6270 |  | Installation of Precast Concrete Curb [Local – 08 ] | 14d | 2027-06-03 | 2027-06-19 | CON-LEG101-LR-5970, CON-LEG101-LR-2170, CON-LEG101-LR-10830, CON-LEG101-LR-7970, CON-LEG101-LR-8070, CON-LEG101-LR-8170, CON-LEG101-LR-2550, CON-LEG101-LR-9420, CON-LEG101-LR-8320, CON-LEG101-LR-6260, CON-LEG101-PR-1540 | 0d |
|  | 1 | **Asphalt Wearing Course** |  | 2027-06-20 | 2027-06-24 |  |  |
| CON-LEG101-LR-6070 |  | Tack coat (RC2) [Local – 08 ] | 2d | 2027-06-20 | 2027-06-21 | CON-LEG101-LR-6270, CON-LEG101-LR-5970 | 0d |
| CON-LEG101-LR-6170 |  | Bituminous wearing course [Local – 08 ] | 3d | 2027-06-22 | 2027-06-24 | CON-LEG101-LR-6070, CON-LEG101-PR-1510, CON-LEG101-EN-3470 | 0d |
|  | 3 | **Interlocking block roads/on-street parking** |  | 2027-06-26 | 2027-07-10 |  |  |
| CON-LEG101-LR-6470 |  | Interlocking block pavers for roads/on-street parking [Local – 08 ] | 13d | 2027-06-26 | 2027-07-10 | CON-LEG101-LR-6270, CON-LEG101-LR-6170, CON-LEG101-LR-5770, CON-LEG101-EN-3450 | 0d |
|  | 4 | **Interlocking block sidewalk/footpath** |  | 2027-07-11 | 2027-08-03 |  |  |
| CON-LEG101-LR-6370 |  | Interlocking block pavers for sidewalk/footpath [Local – 08 ] | 21d | 2027-07-11 | 2027-08-03 | CON-LEG101-LR-6270, CON-LEG101-LR-6470, CON-LEG101-PR-1570 | 0d |
|  | 5 | **Pavement Markings** |  | 2027-06-26 | 2027-07-04 |  |  |
| CON-LEG101-LR-6670 |  | Pavement Markings (White Paint/Yellow Paint) [Local – 08 ] | 4d | 2027-06-26 | 2027-06-29 | CON-LEG101-LR-6170, CON-LEG101-LR-6270, CON-LEG101-PR-1600 | 8d |
| CON-LEG101-LR-6770 |  | Handicap ramp [Local – 08 ] | 4d | 2027-06-30 | 2027-07-04 | CON-LEG101-LR-6670, CON-LEG101-PR-2600 | 8d |
|  | 6 | **Traffic Signs** |  | 2027-07-05 | 2027-07-25 |  |  |
| CON-LEG101-LR-6570 |  | Retroreflective Plastic Cones [Local – 08 ] | 4d | 2027-07-05 | 2027-07-08 | CON-LEG101-LR-6770, CON-LEG101-PR-1630 | 8d |
| CON-LEG101-LR-6870 |  | Installation of Traffic Signs [Local – 08 ] | 14d | 2027-07-10 | 2027-07-25 | CON-LEG101-PR-2060, CON-LEG101-LR-6570, CON-LEG101-PR-1630 | 8d |
|  | 5 | **Fence and Gate** |  | 2026-02-07 | 2027-10-18 |  |  |
|  | 1 | **Fence and Gate Segment -01 (From 0+000 to 0+671)** |  | 2026-02-07 | 2026-06-22 |  |  |
|  | 1 | **Fence** |  | 2026-02-07 | 2026-06-22 |  |  |
| CON-LEG101-FG-1000 |  | Excavation for Fences [Fence and Gate Segment -01] | 10d | 2026-02-07 | 2026-02-17 | CON-LEG101-SD-1000, CON-LEG101-SD-1010, CON-LEG101-SD-1030, CON-LEG101-EN-3410, CON-LEG101-EN-3420, CON-LEG101-EN-3430, CON-LEG101-EN-3440 | 0d |
| CON-LEG101-FG-1100 |  | Lean concrete for Foundation [Fence and Gate Segment -01] | 4d | 2026-02-18 | 2026-02-23 | CON-LEG101-FG-1000, CON-LEG101-EN-3450, CON-LEG101-EN-3460, CON-LEG101-PR-1430 | 0d |
| CON-LEG101-FG-1150 |  | Reinforced concrete Structure [Fence and Gate Segment -01] | 20d | 2026-02-24 | 2026-03-18 | CON-LEG101-PR-1410, CON-LEG101-FG-1100 | 0d |
| CON-LEG101-FG-1200 |  | Spraying of bituminous paint waterproofing for R.C foundation [Fence and Gate Segment -01] | 10d | 2026-03-19 | 2026-04-04 | CON-LEG101-FG-1150, CON-LEG101-PR-1460 | 0d |
| CON-LEG101-FG-1260 |  | Embankments to the Fences [Fence and Gate Segment -01] | 8d | 2026-04-05 | 2026-04-13 | CON-LEG101-FG-1150, CON-LEG101-FG-1200, CON-LEG101-EN-3410, CON-LEG101-EN-3420, CON-LEG101-EN-3430, CON-LEG101-EN-3440 | 0d |
| CON-LEG101-FG-1050 |  | Concrete Works for Ground Beam for Fences [Fence and Gate Segment -01] | 20d | 2026-04-14 | 2026-05-06 | CON-LEG101-FG-1260, CON-LEG101-EN-3410, CON-LEG101-EN-3420, CON-LEG101-EN-3430, CON-LEG101-EN-3440 | 0d |
| CON-LEG101-FG-1420 |  | Plster Works for Fences [Fence and Gate Segment -01] | 12d | 2026-05-07 | 2026-05-20 | CON-LEG101-FG-1050, CON-LEG101-EN-3410, CON-LEG101-EN-3420, CON-LEG101-EN-3430, CON-LEG101-EN-3440 | 0d |
| CON-LEG101-FG-1280 |  | Installation of Metal Fence [Fence and Gate Segment -01] | 14d | 2026-05-21 | 2026-06-10 | CON-LEG101-PR-2080, CON-LEG101-FG-1420, CON-LEG101-FG-1200, CON-LEG101-PR-2020 | 0d |
| CON-LEG101-FG-1340 |  | Paint On Cement Plaster [Fence and Gate Segment -01] | 10d | 2026-06-11 | 2026-06-22 | CON-LEG101-PR-2940, CON-LEG101-FG-1280 FF, CON-LEG101-FG-1280, CON-LEG101-PR-2630 | 0d |
|  | 2 | **Fence and Gate Segment -02 (From 0+671 to 1+342)** |  | 2026-06-23 | 2026-10-29 |  |  |
|  | 1 | **Fence** |  | 2026-06-23 | 2026-10-29 |  |  |
| CON-LEG101-FG-1010 |  | Excavation for Fences [Fence and Gate Segment -02] | 10d | 2026-06-23 | 2026-07-04 | CON-LEG101-SD-1000, CON-LEG101-SD-1010, CON-LEG101-SD-1020, CON-LEG101-SD-1030, CON-LEG101-FG-1340, CON-LEG101-EN-3410, CON-LEG101-EN-3420, CON-LEG101-EN-3430, CON-LEG101-EN-3440 | 0d |
| CON-LEG101-FG-1110 |  | Lean concrete for Foundation [Fence and Gate Segment -02] | 4d | 2026-07-05 | 2026-07-08 | CON-LEG101-FG-1010, CON-LEG101-EN-3450, CON-LEG101-EN-3460, CON-LEG101-PR-1430 | 0d |
| CON-LEG101-FG-1160 |  | Reinforced concrete Structure [Fence and Gate Segment -02] | 20d | 2026-07-09 | 2026-08-01 | CON-LEG101-PR-1410, CON-LEG101-FG-1110 | 0d |
| CON-LEG101-FG-1210 |  | Spraying of bituminous paint waterproofing for R.C foundation [Fence and Gate Segment -02] | 10d | 2026-08-02 | 2026-08-12 | CON-LEG101-FG-1160, CON-LEG101-PR-1460 | 0d |
| CON-LEG101-FG-1330 |  | Embankments to the Fences [Fence and Gate Segment -02] | 8d | 2026-08-13 | 2026-08-22 | CON-LEG101-FG-1210, CON-LEG101-EN-3410, CON-LEG101-EN-3420, CON-LEG101-EN-3430, CON-LEG101-EN-3440 | 0d |

| ID | WBS | Task | Duration | Start | Finish | Predecessors | Total float |
| --- | --- | --- | --- | --- | --- | --- | --- |
| CON-LEG101-FG-1060 |  | Concrete Works for Ground Beam for Fences [Fence and Gate Segment -02] | 20d | 2026-08-23 | 2026-09-14 | CON-LEG101-FG-1330, CON-LEG101-EN-3410, CON-LEG101-EN-3420, CON-LEG101-EN-3430, CON-LEG101-EN-3440 | 0d |
| CON-LEG101-FG-1430 |  | Plster Works for Fences [Fence and Gate Segment -02] | 12d | 2026-09-15 | 2026-09-29 | CON-LEG101-FG-1060, CON-LEG101-EN-3410, CON-LEG101-EN-3420, CON-LEG101-EN-3430, CON-LEG101-EN-3440 | 0d |
| CON-LEG101-FG-1290 |  | Installation of Metal Fence [Fence and Gate Segment -02] | 14d | 2026-09-30 | 2026-10-15 | CON-LEG101-PR-2080, CON-LEG101-FG-1430, CON-LEG101-PR-2020 | 0d |
| CON-LEG101-FG-1350 |  | Paint On Cement Plaster [Fence and Gate Segment -02] | 12d | 2026-10-17 | 2026-10-29 | CON-LEG101-PR-2940, CON-LEG101-FG-1290, CON-LEG101-PR-2630 | 0d |
|  | 3 | **Fence and Gate Segment -03 (From 1+342 to 2+014)** |  | 2026-10-31 | 2027-04-14 |  |  |
|  | 1 | **Fence** |  | 2026-10-31 | 2027-03-13 |  |  |
| CON-LEG101-FG-1020 |  | Excavation for Fences [Fence and Gate Segment -03] | 10d | 2026-10-31 | 2026-11-10 | CON-LEG101-SD-1000, CON-LEG101-SD-1010, CON-LEG101-SD-1020, CON-LEG101-SD-1030, CON-LEG101-FG-1350, CON-LEG101-EN-3410, CON-LEG101-EN-3420, CON-LEG101-EN-3430, CON-LEG101-EN-3440 | 0d |
| CON-LEG101-FG-1120 |  | Lean concrete for Foundation [Fence and Gate Segment -03] | 4d | 2026-11-11 | 2026-11-15 | CON-LEG101-FG-1020, CON-LEG101-EN-3450, CON-LEG101-EN-3460, CON-LEG101-PR-1430 | 0d |
| CON-LEG101-FG-1170 |  | Reinforced concrete Structure [Fence and Gate Segment -03] | 20d | 2026-11-16 | 2026-12-08 | CON-LEG101-PR-1410, CON-LEG101-FG-1120 | 0d |
| CON-LEG101-FG-1220 |  | Spraying of bituminous paint waterproofing for R.C foundation [Fence and Gate Segment -03] | 10d | 2026-12-09 | 2026-12-20 | CON-LEG101-FG-1170, CON-LEG101-PR-1460 | 0d |
| CON-LEG101-FG-1390 |  | Embankments to the Fences [Fence and Gate Segment -03] | 8d | 2026-12-21 | 2026-12-29 | CON-LEG101-FG-1220, CON-LEG101-EN-3410, CON-LEG101-EN-3420, CON-LEG101-EN-3430, CON-LEG101-EN-3440 | 0d |
| CON-LEG101-FG-1070 |  | Concrete Works for Ground Beam for Fences [Fence and Gate Segment -03] | 20d | 2026-12-30 | 2027-01-21 | CON-LEG101-FG-1390, CON-LEG101-EN-3410, CON-LEG101-EN-3420, CON-LEG101-EN-3430, CON-LEG101-EN-3440 | 0d |
| CON-LEG101-FG-1440 |  | Plster Works for Fences [Fence and Gate Segment -03] | 12d | 2027-01-23 | 2027-02-04 | CON-LEG101-FG-1070, CON-LEG101-EN-3410, CON-LEG101-EN-3420, CON-LEG101-EN-3430, CON-LEG101-EN-3440 | 0d |
| CON-LEG101-FG-1300 |  | Installation of Metal Fence [Fence and Gate Segment -03] | 14d | 2027-02-06 | 2027-02-27 | CON-LEG101-PR-2080, CON-LEG101-FG-1440, CON-LEG101-PR-2020 | 0d |
| CON-LEG101-FG-1360 |  | Paint On Cement Plaster [Fence and Gate Segment -03] | 12d | 2027-02-28 | 2027-03-13 | CON-LEG101-PR-2940, CON-LEG101-FG-1300, CON-LEG101-PR-2630 | 0d |
|  | 2 | **Gate** |  | 2027-02-28 | 2027-04-14 |  |  |
| CON-LEG101-FG-1250 |  | Installation of Main Entrance Motorized Gate [Fence and Gate Segment -03] | 20d | 2027-02-28 | 2027-03-22 | CON-LEG101-PR-2050, CON-LEG101-PR-2090, CON-LEG101-FG-1300 | 6d |
| CON-LEG101-FG-1270 |  | Installation of Pedestrain Gate [Fence and Gate Segment -03] | 20d | 2027-03-23 | 2027-04-14 | CON-LEG101-PR-2050, CON-LEG101-PR-2090, CON-LEG101-FG-1250 | 6d |
|  | 4 | **Fence and Gate Segment -04 (From 2+014 to 2+685)** |  | 2027-03-14 | 2027-07-13 |  |  |
|  | 1 | **Fence** |  | 2027-03-14 | 2027-07-13 |  |  |
| CON-LEG101-FG-1030 |  | Excavation for Fences [Fence and Gate Segment -04] | 10d | 2027-03-14 | 2027-03-24 | CON-LEG101-SD-1000, CON-LEG101-SD-1010, CON-LEG101-SD-1020, CON-LEG101-SD-1030, CON-LEG101-FG-1360, CON-LEG101-EN-3410, CON-LEG101-EN-3420, CON-LEG101-EN-3430, CON-LEG101-EN-3440 | 0d |
| CON-LEG101-FG-1130 |  | Lean concrete for Foundation [Fence and Gate Segment -04] | 4d | 2027-03-25 | 2027-03-29 | CON-LEG101-FG-1030, CON-LEG101-EN-3450, CON-LEG101-EN-3460, CON-LEG101-PR-1430 | 0d |
| CON-LEG101-FG-1180 |  | Reinforced concrete Structure [Fence and Gate Segment -04] | 20d | 2027-03-30 | 2027-04-21 | CON-LEG101-PR-1410, CON-LEG101-FG-1130 | 0d |
| CON-LEG101-FG-1230 |  | Spraying of bituminous paint waterproofing for R.C foundation [Fence and Gate Segment -04] | 10d | 2027-04-22 | 2027-05-03 | CON-LEG101-FG-1180, CON-LEG101-PR-1460, CON-LEG101-FG-1270 | 0d |
| CON-LEG101-FG-1400 |  | Embankments to the Fences [Fence and Gate Segment -04] | 8d | 2027-05-04 | 2027-05-12 | CON-LEG101-FG-1230, CON-LEG101-EN-3410, CON-LEG101-EN-3420, CON-LEG101-EN-3430, CON-LEG101-EN-3440 | 0d |
| CON-LEG101-FG-1080 |  | Concrete Works for Ground Beam for Fences [Fence and Gate Segment -04] | 20d | 2027-05-13 | 2027-06-09 | CON-LEG101-FG-1400, CON-LEG101-EN-3410, CON-LEG101-EN-3420, CON-LEG101-EN-3430, CON-LEG101-EN-3440, CON-LEG101-MS-1050 | 0d |
| CON-LEG101-FG-1450 |  | Plster Works for Fences [Fence and Gate Segment -04] | 10d | 2027-06-10 | 2027-06-21 | CON-LEG101-FG-1080, CON-LEG101-EN-3410, CON-LEG101-EN-3420, CON-LEG101-EN-3430, CON-LEG101-EN-3440 | 0d |
| CON-LEG101-FG-1310 |  | Installation of Metal Fence [Fence and Gate Segment -04] | 7d | 2027-06-22 | 2027-06-29 | CON-LEG101-PR-2080, CON-LEG101-FG-1450, CON-LEG101-PR-2020, CON-LEG101-MS-1020 | 0d |
| CON-LEG101-FG-1370 |  | Paint On Cement Plaster [Fence and Gate Segment -04] | 12d | 2027-06-30 | 2027-07-13 | CON-LEG101-PR-2940, CON-LEG101-FG-1310, CON-LEG101-PR-2630 | 0d |
|  | 5 | **Fence and Gate Segment -05 (From 2+685 to 3+356)** |  | 2027-07-14 | 2027-10-18 |  |  |
|  | 1 | **Fence** |  | 2027-07-14 | 2027-10-18 |  |  |
| CON-LEG101-FG-1040 |  | Excavation for Fences [Fence and Gate Segment -05] | 10d | 2027-07-14 | 2027-07-25 | CON-LEG101-SD-1000, CON-LEG101-SD-1010, CON-LEG101-SD-1020, CON-LEG101-SD-1030, CON-LEG101-FG-1370, CON-LEG101-EN-3410, CON-LEG101-EN-3420, CON-LEG101-EN-3430, CON-LEG101-EN-3440, CON-LEG101-MS-1020 | 0d |
| CON-LEG101-FG-1140 |  | Lean concrete for Foundation [Fence and Gate Segment -05] | 4d | 2027-07-26 | 2027-07-29 | CON-LEG101-FG-1040, CON-LEG101-EN-3450, CON-LEG101-EN-3460, CON-LEG101-PR-1430 | 0d |
| CON-LEG101-FG-1190 |  | Reinforced concrete Structure [Fence and Gate Segment -05] | 20d | 2027-07-31 | 2027-08-22 | CON-LEG101-PR-1410, CON-LEG101-FG-1140 | 0d |
| CON-LEG101-FG-1240 |  | Spraying of bituminous paint waterproofing for R.C foundation [Fence and Gate Segment -05] | 10d | 2027-08-23 | 2027-09-02 | CON-LEG101-FG-1190, CON-LEG101-PR-1460 | 0d |
| CON-LEG101-FG-1410 |  | Embankments to the Fences [Fence and Gate Segment -05] | 4d | 2027-09-04 | 2027-09-07 | CON-LEG101-FG-1240, CON-LEG101-EN-3410, CON-LEG101-EN-3420, CON-LEG101-EN-3430, CON-LEG101-EN-3440 | 0d |
| CON-LEG101-FG-1090 |  | Concrete Works for Ground Beam for Fences [Fence and Gate Segment -05] | 15d | 2027-09-08 | 2027-09-26 | CON-LEG101-FG-1410, CON-LEG101-EN-3410, CON-LEG101-EN-3420, CON-LEG101-EN-3430, CON-LEG101-EN-3440 | 0d |
| CON-LEG101-FG-1460 |  | Plster Works for Fences [Fence and Gate Segment -05] | 6d | 2027-09-27 | 2027-10-03 | CON-LEG101-FG-1090, CON-LEG101-EN-3410, CON-LEG101-EN-3420, CON-LEG101-EN-3430, CON-LEG101-EN-3440 | 0d |
| CON-LEG101-FG-1320 |  | Installation of Metal Fence [Fence and Gate Segment -05] | 7d | 2027-10-04 | 2027-10-11 | CON-LEG101-FG-1460, CON-LEG101-FG-1240, CON-LEG101-PR-2020 | 0d |
| CON-LEG101-FG-1380 |  | Paint On Cement Plaster [Fence and Gate Segment -05] | 6d | 2027-10-12 | 2027-10-18 | CON-LEG101-PR-2940, CON-LEG101-FG-1320, CON-LEG101-PR-2630 | 0d |
|  | 2 | **Roundabout & Landscape** |  | 2027-03-14 | 2027-10-18 |  |  |
|  | 10 | **Local – 01** |  | 2027-03-14 | 2027-10-10 |  |  |
|  | 1 | **LOCAL - 01 Segment-01 (From 0+000 to 1+066)** |  | 2027-03-14 | 2027-10-09 |  |  |
|  | 3 | **Irrigation Works** |  | 2027-03-14 | 2027-07-22 |  |  |
|  | 1 | **Secondary Irrigation** |  | 2027-03-14 | 2027-07-22 |  |  |
|  | 1 | **Pipe Work** |  | 2027-03-14 | 2027-06-05 |  |  |
| CON-LEG101-LR-4870 |  | Excavation for Secondary Irrigation [Local – 01 Segment-01] | 8d | 2027-03-14 | 2027-03-22 | CON-LEG101-LR-6180, CON-LEG101-LR-7420 SS, CON-LEG101-EN-3340, CON-LEG101-EN-3440 | 8d |
| CON-LEG101-LR-4940 |  | Sand bedding for Secondary Irrigation [Local – 01 Segment-01] | 5d | 2027-03-23 | 2027-03-28 | CON-LEG101-LR-4870 | 8d |
| CON-LEG101-LR-5010 |  | Installation of Pipe for Secondary Irrigation [Local – 01 Segment-01] | 10d | 2027-03-29 | 2027-04-08 | CON-LEG101-PR-3980, CON-LEG101-LR-4940, CON-LEG101-PR-3940 | 8d |
| CON-LEG101-LR-5080 |  | Sand Surround for Secondary Irrigation [Local – 01 Segment-01] | 5d | 2027-04-10 | 2027-04-14 | CON-LEG101-LR-5010 | 8d |
| CON-LEG101-LR-5150 |  | Installation of Micron Marker Magnetic Tape [Local – 01 Segment-01] | 10d | 2027-04-15 | 2027-04-26 | CON-LEG101-LR-5080 | 8d |
| CON-LEG101-LR-5210 |  | Backfilling to Subgrade Elevation [Local – 01 Segment-01] | 5d | 2027-04-27 | 2027-05-02 | CON-LEG101-LR-5150, CON-LEG101-EN-3440 | 8d |
| CON-LEG101-LR-5410 |  | Installation of tubing for risers connections from laterals [Local – 01 Segment-01] | 17d | 2027-05-12 | 2027-06-05 | CON-LEG101-LR-5210, CON-LEG101-PR-2770 | 0d |
|  | 2 | **Valves and Controller** |  | 2027-06-06 | 2027-07-22 |  |  |
| CON-LEG101-LR-5270 |  | Installation of Electrical Solenoid Valve [Local – 01 Segment-01] | 5d | 2027-06-06 | 2027-06-10 | CON-LEG101-LR-5010, CON-LEG101-PR-3020, CON-LEG101-LR-5410 | 8d |
| CON-LEG101-LR-5310 |  | Installation of quick coupler valve [Local – 01 Segment-01] | 5d | 2027-06-12 | 2027-06-16 | CON-LEG101-LR-5270, CON-LEG101-PR-3030 | 8d |
| CON-LEG101-LR-5350 |  | Installation of a Flush valve [Local – 01 Segment-01] | 5d | 2027-06-17 | 2027-06-22 | CON-LEG101-PR-2760, CON-LEG101-LR-5310, CON-LEG101-PR-3110 | 8d |
| CON-LEG101-LR-5470 |  | Installation of Advanced Irrigation controller [Local – 01 Segment-01] | 7d | 2027-06-23 | 2027-06-30 | CON-LEG101-PR-2780, CON-LEG101-LR-5350, CON-LEG101-PR-3040 | 8d |
| CON-LEG101-LR-5480 |  | Install single station decoder for valve connection [Local – 01 Segment-01] | 7d | 2027-07-01 | 2027-07-08 | CON-LEG101-LR-5470, CON-LEG101-PR-3150 | 8d |
| CON-LEG101-LR-5520 |  | Installation of Decoder cables 12 AWG between valves and controllers [Local – 01 Segment-01] | 12d | 2027-07-10 | 2027-07-22 | CON-LEG101-LR-5480, CON-LEG101-PR-3050 | 8d |
|  | 14 | **Curbs and edging** |  | 2027-07-24 | 2027-07-25 |  |  |
| CON-LEG101-LR-4790 |  | Installation of Curbs and edging [Local – 01 Segment-01] | 2d | 2027-07-24 | 2027-07-25 | CON-LEG101-LR-5520, CON-LEG101-PR-3070, CON-LEG101-EN-3400 | 8d |
|  | 13 | **Landscape** |  | 2027-07-26 | 2027-10-09 |  |  |
| CON-LEG101-LR-4580 |  | Site preparation for Planting Area [Local – 01 Segment-01] | 9d | 2027-07-26 | 2027-08-04 | CON-LEG101-LR-4790, CON-LEG101-EN-3370, CON-LEG101-EN-3440 | 8d |
| CON-LEG101-LR-4650 |  | Placing Agricutural Soil [Local – 01 Segment-01] | 9d | 2027-08-05 | 2027-08-15 | CON-LEG101-LR-4580, CON-LEG101-EN-3380 | 8d |
| CON-LEG101-LR-4720 |  | Planting Shrubs And Ground Cover [Local – 01 Segment-01] | 20d | 2027-09-15 | 2027-10-09 | CON-LEG101-LR-4650, CON-LEG101-EN-3390, CON-LEG101-PR-3060 | 8d |
|  | 2 | **LOCAL - 01 Segment-02 (From 1+066 to 2+133)** |  | 2027-06-06 | 2027-10-09 |  |  |
|  | 2 | **Irrigation Works** |  | 2027-06-06 | 2027-09-04 |  |  |
|  | 1 | **Secondary Irrigation** |  | 2027-06-06 | 2027-09-04 |  |  |
|  | 1 | **Pipe Work** |  | 2027-06-06 | 2027-07-29 |  |  |

| ID | WBS | Task | Duration | Start | Finish | Predecessors | Total float |
| --- | --- | --- | --- | --- | --- | --- | --- |
| CON-LEG101-LR-4880 |  | Excavation for Secondary Irrigation [Local – 01 Segment-02] | 5d | 2027-06-06 | 2027-06-10 | CON-LEG101-LR-6190, CON-LEG101-LR-8090, CON-LEG101-EN-3340, CON-LEG101-EN-3440, CON-LEG101-LR-5410 | 0d |
| CON-LEG101-LR-4950 |  | Sand bedding for Secondary Irrigation [Local – 01 Segment-02] | 5d | 2027-06-12 | 2027-06-16 | CON-LEG101-LR-4880, CON-LEG101-MS-1020 | 0d |
| CON-LEG101-LR-5020 |  | Installation of Pipe for Secondary Irrigation [Local – 01 Segment-02] | 5d | 2027-06-17 | 2027-06-22 | CON-LEG101-PR-3980, CON-LEG101-LR-4950, CON-LEG101-PR-3940 | 0d |
| CON-LEG101-LR-5090 |  | Sand Surround for Secondary Irrigation [Local – 01 Segment-02] | 5d | 2027-06-23 | 2027-06-28 | CON-LEG101-LR-5020 | 0d |
| CON-LEG101-LR-5160 |  | Installation of Micron Marker Magnetic Tape [Local – 01 Segment-02] | 5d | 2027-06-29 | 2027-07-04 | CON-LEG101-LR-5090 | 0d |
| CON-LEG101-LR-5220 |  | Backfilling to Subgrade Elevation [Local – 01 Segment-02] | 5d | 2027-07-05 | 2027-07-10 | CON-LEG101-LR-5160, CON-LEG101-EN-3440 | 0d |
| CON-LEG101-LR-5420 |  | Installation of tubing for risers connections from laterals [Local – 01 Segment-02] | 17d | 2027-07-11 | 2027-07-29 | CON-LEG101-LR-5220, CON-LEG101-PR-2770 | 0d |
|  | 2 | **Valves and Controller** |  | 2027-08-16 | 2027-09-04 |  |  |
| CON-LEG101-LR-5360 |  | Installation of a Flush valve [Local – 01 Segment-02] | 5d | 2027-08-16 | 2027-08-21 | CON-LEG101-PR-2760, CON-LEG101-LR-5020, CON-LEG101-PR-3110, CON-LEG101-LR-4650 | 8d |
| CON-LEG101-LR-5530 |  | Installation of Decoder cables 12 AWG between valves and controllers [Local – 01 Segment-02] | 12d | 2027-08-22 | 2027-09-04 | CON-LEG101-PR-2790, CON-LEG101-LR-5360, CON-LEG101-PR-3050 | 8d |
|  | 14 | **Curbs and edging** |  | 2027-09-05 | 2027-09-06 |  |  |
| CON-LEG101-LR-4800 |  | Installation of Curbs and edging [Local – 01 Segment-02] | 2d | 2027-09-05 | 2027-09-06 | CON-LEG101-LR-5530, CON-LEG101-PR-3070, CON-LEG101-EN-3400 | 8d |
|  | 13 | **Landscape** |  | 2027-09-07 | 2027-10-09 |  |  |
| CON-LEG101-LR-4590 |  | Site preparation for Planting Area [Local – 01 Segment-02] | 9d | 2027-09-07 | 2027-09-16 | CON-LEG101-LR-4800, CON-LEG101-EN-3370, CON-LEG101-EN-3440 | 8d |
| CON-LEG101-LR-4660 |  | Placing Agricutural Soil [Local – 01 Segment-02] | 9d | 2027-09-18 | 2027-09-28 | CON-LEG101-LR-4590, CON-LEG101-EN-3380 | 8d |
| CON-LEG101-LR-4730 |  | Planting Shrubs And Ground Cover [Local – 01 Segment-02] | 9d | 2027-09-29 | 2027-10-09 | CON-LEG101-LR-4660, CON-LEG101-EN-3390, CON-LEG101-PR-3060 | 8d |
|  | 3 | **LOCAL - 01 Segment-03 (From 2+133 to 3+200)** |  | 2027-07-31 | 2027-10-10 |  |  |
|  | 2 | **Irrigation Works** |  | 2027-07-31 | 2027-10-04 |  |  |
|  | 1 | **Secondary Irrigation** |  | 2027-07-31 | 2027-10-04 |  |  |
|  | 1 | **Pipe Work** |  | 2027-07-31 | 2027-10-04 |  |  |
| CON-LEG101-LR-4890 |  | Excavation for Secondary Irrigation [Local – 01 Segment-03] | 5d | 2027-07-31 | 2027-08-04 | CON-LEG101-LR-6200, CON-LEG101-LR-8100, CON-LEG101-EN-3340, CON-LEG101-EN-3440, CON-LEG101-LR-5420 | 0d |
| CON-LEG101-LR-4960 |  | Sand bedding for Secondary Irrigation [Local – 01 Segment-03] | 5d | 2027-08-05 | 2027-08-10 | CON-LEG101-LR-4890 | 7d |
| CON-LEG101-LR-5030 |  | Installation of Pipe for Secondary Irrigation [Local – 01 Segment-03] | 5d | 2027-08-11 | 2027-08-16 | CON-LEG101-PR-3980, CON-LEG101-LR-4960, CON-LEG101-PR-3940 | 7d |
| CON-LEG101-LR-5100 |  | Sand Surround for Secondary Irrigation [Local – 01 Segment-03] | 8d | 2027-08-17 | 2027-08-25 | CON-LEG101-LR-5030 | 12d |
| CON-LEG101-LR-5170 |  | Installation of Micron Marker Magnetic Tape [Local – 01 Segment-03] | 8d | 2027-08-26 | 2027-09-04 | CON-LEG101-LR-5100 | 12d |
| CON-LEG101-LR-5230 |  | Backfilling to Subgrade Elevation [Local – 01 Segment-03] | 8d | 2027-09-05 | 2027-09-13 | CON-LEG101-LR-5170, CON-LEG101-EN-3440 | 12d |
| CON-LEG101-LR-5430 |  | Installation of tubing for risers connections from laterals [Local – 01 Segment-03] | 17d | 2027-09-14 | 2027-10-04 | CON-LEG101-LR-5230, CON-LEG101-PR-2770 | 12d |
|  | 2 | **Valves and Controller** |  | 2027-08-17 | 2027-09-05 |  |  |
| CON-LEG101-LR-5370 |  | Installation of a Flush valve [Local – 01 Segment-03] | 5d | 2027-08-17 | 2027-08-22 | CON-LEG101-PR-2760, CON-LEG101-LR-5030, CON-LEG101-PR-3110 | 7d |
| CON-LEG101-LR-5540 |  | Installation of Decoder cables 12 AWG between valves and controllers [Local – 01 Segment-03] | 12d | 2027-08-23 | 2027-09-05 | CON-LEG101-PR-2790, CON-LEG101-LR-5370, CON-LEG101-PR-3050 | 7d |
|  | 14 | **Curbs and edging** |  | 2027-09-06 | 2027-09-07 |  |  |
| CON-LEG101-LR-4810 |  | Installation of Curbs and edging [Local – 01 Segment-03] | 2d | 2027-09-06 | 2027-09-07 | CON-LEG101-LR-5540, CON-LEG101-PR-3070, CON-LEG101-EN-3400 | 7d |
|  | 13 | **Landscape** |  | 2027-09-08 | 2027-10-10 |  |  |
| CON-LEG101-LR-4600 |  | Site preparation for Planting Area [Local – 01 Segment-03] | 9d | 2027-09-08 | 2027-09-18 | CON-LEG101-LR-4810, CON-LEG101-EN-3370, CON-LEG101-EN-3440 | 7d |
| CON-LEG101-LR-4670 |  | Placing Agricutural Soil [Local – 01 Segment-03] | 9d | 2027-09-19 | 2027-09-29 | CON-LEG101-LR-4600, CON-LEG101-EN-3380 | 7d |
| CON-LEG101-LR-4740 |  | Planting Shrubs And Ground Cover [Local – 01 Segment-03] | 9d | 2027-09-30 | 2027-10-10 | CON-LEG101-LR-4670, CON-LEG101-EN-3390, CON-LEG101-PR-3060 | 7d |
|  | 3 | **Local – 02** |  | 2027-08-05 | 2027-10-18 |  |  |
|  | 3 | **Irrigation Works** |  | 2027-08-05 | 2027-10-06 |  |  |
|  | 1 | **Secondary Irrigation** |  | 2027-08-05 | 2027-10-06 |  |  |
|  | 1 | **Pipe Work** |  | 2027-08-05 | 2027-10-06 |  |  |
| CON-LEG101-LR-4900 |  | Excavation for Secondary Irrigation [Local – 02 ] | 4d | 2027-08-05 | 2027-08-09 | CON-LEG101-LR-6210, CON-LEG101-LR-7430, CON-LEG101-EN-3340, CON-LEG101-EN-3440, CON-LEG101-LR-4890 | 0d |
| CON-LEG101-LR-4970 |  | Sand bedding for Secondary Irrigation [Local – 02 ] | 4d | 2027-08-10 | 2027-08-14 | CON-LEG101-LR-4900 | 0d |
| CON-LEG101-LR-5040 |  | Installation of Pipe for Secondary Irrigation [Local – 02 ] | 4d | 2027-08-15 | 2027-08-18 | CON-LEG101-PR-3980, CON-LEG101-LR-4970, CON-LEG101-PR-3940 | 0d |
| CON-LEG101-LR-5110 |  | Sand Surround for Secondary Irrigation [Local – 02 ] | 8d | 2027-08-19 | 2027-08-28 | CON-LEG101-LR-5040 | 10d |
| CON-LEG101-LR-5180 |  | Installation of Micron Marker Magnetic Tape [Local – 02 ] | 8d | 2027-08-29 | 2027-09-06 | CON-LEG101-LR-5110 | 10d |
| CON-LEG101-LR-5240 |  | Backfilling to Subgrade Elevation [Local – 02 ] | 10d | 2027-09-07 | 2027-09-18 | CON-LEG101-LR-5180, CON-LEG101-EN-3440 | 10d |
| CON-LEG101-LR-5440 |  | Installation of tubing for risers connections from laterals [Local – 02 ] | 15d | 2027-09-19 | 2027-10-06 | CON-LEG101-LR-5240, CON-LEG101-PR-2770 | 10d |
|  | 2 | **Valves and Controller** |  | 2027-08-19 | 2027-09-22 |  |  |
| CON-LEG101-LR-5280 |  | Installation of Electrical Solenoid Valve [Local – 02 ] | 5d | 2027-08-19 | 2027-08-24 | CON-LEG101-LR-5040, CON-LEG101-PR-3020 | 0d |
| CON-LEG101-LR-5320 |  | Installation of quick coupler valve [Local – 02 ] | 5d | 2027-08-25 | 2027-08-30 | CON-LEG101-LR-5280, CON-LEG101-PR-3030 | 0d |
| CON-LEG101-LR-5380 |  | Installation of a Flush valve [Local – 02 ] | 4d | 2027-08-31 | 2027-09-04 | CON-LEG101-PR-2760, CON-LEG101-LR-5320, CON-LEG101-PR-3110 | 0d |
| CON-LEG101-LR-5490 |  | Install single station decoder for valve connection [Local – 02 ] | 7d | 2027-09-05 | 2027-09-12 | CON-LEG101-PR-2830, CON-LEG101-LR-5380, CON-LEG101-PR-3150 | 0d |
| CON-LEG101-LR-5550 |  | Installation of Decoder cables 12 AWG between valves and controllers [Local – 02 ] | 9d | 2027-09-13 | 2027-09-22 | CON-LEG101-PR-2790, CON-LEG101-LR-5490, CON-LEG101-PR-3050 | 0d |
|  | 14 | **Curbs and edging** |  | 2027-09-25 | 2027-09-27 |  |  |
| CON-LEG101-LR-4830 |  | Installation of Curbs and edging [Local – 02 ] | 3d | 2027-09-25 | 2027-09-27 | CON-LEG101-LR-5550, CON-LEG101-PR-3070, CON-LEG101-EN-3400 | 0d |
|  | 13 | **Landscape** |  | 2027-09-28 | 2027-10-18 |  |  |
| CON-LEG101-LR-4610 |  | Site preparation for Planting Area [Local – 02 ] | 6d | 2027-09-28 | 2027-10-04 | CON-LEG101-LR-4830, CON-LEG101-EN-3370, CON-LEG101-EN-3440 | 0d |
| CON-LEG101-LR-4680 |  | Placing Agricutural Soil [Local – 02 ] | 6d | 2027-10-05 | 2027-10-11 | CON-LEG101-LR-4610, CON-LEG101-EN-3380 | 0d |
| CON-LEG101-LR-4750 |  | Planting Shrubs And Ground Cover [Local – 02 ] | 6d | 2027-10-12 | 2027-10-18 | CON-LEG101-LR-4680, CON-LEG101-EN-3390, CON-LEG101-PR-3060 | 0d |
|  | 5 | **Local – 04** |  | 2027-08-05 | 2027-10-09 |  |  |
|  | 2 | **Irrigation Works** |  | 2027-08-05 | 2027-09-25 |  |  |
|  | 1 | **Secondary Irrigation** |  | 2027-08-05 | 2027-09-25 |  |  |
|  | 1 | **Pipe Work** |  | 2027-08-05 | 2027-09-07 |  |  |
| CON-LEG101-LR-4910 |  | Excavation for Secondary Irrigation [Local – 04 ] | 3d | 2027-08-05 | 2027-08-08 | CON-LEG101-LR-6230, CON-LEG101-LR-7450, CON-LEG101-EN-3340, CON-LEG101-EN-3440, CON-LEG101-LR-4900 SS | 7d |
| CON-LEG101-LR-4980 |  | Sand bedding for Secondary Irrigation [Local – 04 ] | 6d | 2027-08-09 | 2027-08-15 | CON-LEG101-LR-4910 | 8d |
| CON-LEG101-LR-5050 |  | Installation of Pipe for Secondary Irrigation [Local – 04 ] | 8d | 2027-08-16 | 2027-08-24 | CON-LEG101-PR-3980, CON-LEG101-LR-4980, CON-LEG101-PR-3940 | 8d |
| CON-LEG101-LR-5120 |  | Sand Surround for Secondary Irrigation [Local – 04 ] | 3d | 2027-08-25 | 2027-08-28 | CON-LEG101-LR-5050 | 8d |
| CON-LEG101-LR-5190 |  | Installation of Micron Marker Magnetic Tape [Local – 04 ] | 5d | 2027-08-29 | 2027-09-02 | CON-LEG101-LR-5120 | 8d |
| CON-LEG101-LR-5250 |  | Backfilling to Subgrade Elevation [Local – 04 ] | 2d | 2027-09-04 | 2027-09-05 | CON-LEG101-LR-5190, CON-LEG101-EN-3440 | 8d |
| CON-LEG101-LR-5450 |  | Installation of tubing for risers connections from laterals [Local – 04 ] | 2d | 2027-09-06 | 2027-09-07 | CON-LEG101-LR-5250, CON-LEG101-PR-2770 | 8d |

| ID | WBS | Task | Duration | Start | Finish | Predecessors | Total float |
| --- | --- | --- | --- | --- | --- | --- | --- |
|  | 2 | **Valves and Controller** |  | 2027-08-25 | 2027-09-25 |  |  |
| CON-LEG101-LR-5290 |  | Installation of Electrical Solenoid Valve [Local – 04 ] | 6d | 2027-08-25 | 2027-08-31 | CON-LEG101-LR-5050, CON-LEG101-PR-3020 | 8d |
| CON-LEG101-LR-5330 |  | Installation of quick coupler valve [Local – 04 ] | 6d | 2027-09-01 | 2027-09-07 | CON-LEG101-LR-5290, CON-LEG101-PR-3030 | 8d |
| CON-LEG101-LR-5390 |  | Installation of a Flush valve [Local – 04 ] | 5d | 2027-09-08 | 2027-09-13 | CON-LEG101-PR-2760, CON-LEG101-LR-5330, CON-LEG101-PR-3110, CON-LEG101-LR-5450 | 8d |
| CON-LEG101-LR-5500 |  | Install single station decoder for valve connection [Local – 04 ] | 7d | 2027-09-14 | 2027-09-21 | CON-LEG101-PR-2830, CON-LEG101-LR-5390, CON-LEG101-PR-3150 | 8d |
| CON-LEG101-LR-5560 |  | Installation of Decoder cables 12 AWG between valves and controllers [Local – 04 ] | 2d | 2027-09-22 | 2027-09-25 | CON-LEG101-PR-2790, CON-LEG101-LR-5500, CON-LEG101-PR-3050 | 8d |
|  | 14 | **Curbs and edging** |  | 2027-09-26 | 2027-09-28 |  |  |
| CON-LEG101-LR-4840 |  | Installation of Curbs and edging [Local – 04 ] | 3d | 2027-09-26 | 2027-09-28 | CON-LEG101-LR-5560, CON-LEG101-PR-3070, CON-LEG101-EN-3400 | 8d |
|  | 13 | **Landscape** |  | 2027-09-29 | 2027-10-09 |  |  |
| CON-LEG101-LR-4620 |  | Site preparation for Planting Area [Local – 04 ] | 3d | 2027-09-29 | 2027-10-02 | CON-LEG101-LR-4840, CON-LEG101-EN-3370, CON-LEG101-EN-3440 | 8d |
| CON-LEG101-LR-4690 |  | Placing Agricutural Soil [Local – 04 ] | 3d | 2027-10-03 | 2027-10-05 | CON-LEG101-LR-4620, CON-LEG101-EN-3380 | 8d |
| CON-LEG101-LR-4760 |  | Planting Shrubs And Ground Cover [Local – 04 ] | 3d | 2027-10-06 | 2027-10-09 | CON-LEG101-LR-4690, CON-LEG101-EN-3390, CON-LEG101-PR-3060 | 8d |
|  | 6 | **Local – 06** |  | 2027-08-05 | 2027-10-10 |  |  |
|  | 2 | **Irrigation Works** |  | 2027-08-05 | 2027-09-21 |  |  |
|  | 1 | **Secondary Irrigation** |  | 2027-08-05 | 2027-09-21 |  |  |
|  | 1 | **Pipe Work** |  | 2027-08-05 | 2027-08-24 |  |  |
| CON-LEG101-LR-4920 |  | Excavation for Secondary Irrigation [Local – 06 ] | 3d | 2027-08-05 | 2027-08-08 | CON-LEG101-LR-6250, CON-LEG101-LR-7470, CON-LEG101-EN-3340, CON-LEG101-EN-3440, CON-LEG101-LR-4910 SS | 7d |
| CON-LEG101-LR-5060 |  | Installation of Pipe for Secondary Irrigation [Local – 06 ] | 3d | 2027-08-09 | 2027-08-11 | CON-LEG101-LR-4920, CON-LEG101-PR-3980, CON-LEG101-PR-3940 | 7d |
| CON-LEG101-LR-5260 |  | Backfilling to Subgrade Elevation [Local – 06 ] | 3d | 2027-08-12 | 2027-08-15 | CON-LEG101-LR-5060, CON-LEG101-EN-3440 | 7d |
| CON-LEG101-LR-5460 |  | Installation of tubing for risers connections from laterals [Local – 06 ] | 8d | 2027-08-16 | 2027-08-24 | CON-LEG101-LR-5260, CON-LEG101-PR-2770 | 7d |
|  | 2 | **Valves and Controller** |  | 2027-08-25 | 2027-09-21 |  |  |
| CON-LEG101-LR-5300 |  | Installation of Electrical Solenoid Valve [Local – 06 ] | 4d | 2027-08-25 | 2027-08-29 | CON-LEG101-LR-5060, CON-LEG101-PR-3020, CON-LEG101-LR-5460 | 7d |
| CON-LEG101-LR-5340 |  | Installation of quick coupler valve [Local – 06 ] | 4d | 2027-08-30 | 2027-09-02 | CON-LEG101-LR-5300, CON-LEG101-PR-3030 | 7d |
| CON-LEG101-LR-5400 |  | Installation of a Flush valve [Local – 06 ] | 5d | 2027-09-04 | 2027-09-08 | CON-LEG101-PR-2760, CON-LEG101-LR-5340, CON-LEG101-PR-3110 | 7d |
| CON-LEG101-LR-5510 |  | Install single station decoder for valve connection [Local – 06 ] | 5d | 2027-09-09 | 2027-09-14 | CON-LEG101-PR-2830, CON-LEG101-LR-5400, CON-LEG101-PR-3150 | 7d |
| CON-LEG101-LR-5570 |  | Installation of Decoder cables 12 AWG between valves and controllers [Local – 06 ] | 6d | 2027-09-15 | 2027-09-21 | CON-LEG101-PR-2790, CON-LEG101-LR-5510, CON-LEG101-PR-3050 | 7d |
|  | 14 | **Curbs and edging** |  | 2027-09-22 | 2027-09-26 |  |  |
| CON-LEG101-LR-4850 |  | Installation of Curbs and edging [Local – 06 ] | 3d | 2027-09-22 | 2027-09-26 | CON-LEG101-LR-5570, CON-LEG101-PR-3070, CON-LEG101-EN-3400 | 7d |
|  | 13 | **Landscape** |  | 2027-09-27 | 2027-10-10 |  |  |
| CON-LEG101-LR-4630 |  | Site preparation for Planting Area [Local – 06 ] | 4d | 2027-09-27 | 2027-09-30 | CON-LEG101-LR-4850, CON-LEG101-EN-3370, CON-LEG101-EN-3440 | 7d |
| CON-LEG101-LR-4700 |  | Placing Agricutural Soil [Local – 06 ] | 4d | 2027-10-02 | 2027-10-05 | CON-LEG101-LR-4630, CON-LEG101-EN-3380 | 7d |
| CON-LEG101-LR-4770 |  | Planting Shrubs And Ground Cover [Local – 06 ] | 4d | 2027-10-06 | 2027-10-10 | CON-LEG101-LR-4700, CON-LEG101-EN-3390, CON-LEG101-PR-3060 | 7d |
|  | 1 | **Roundabout - 01 (L01 & L04)** |  | 2027-04-07 | 2027-10-07 |  |  |
|  | 1 | **Irrigation Works** |  | 2027-04-07 | 2027-08-01 |  |  |
|  | 1 | **Secondary Irrigation** |  | 2027-04-07 | 2027-08-01 |  |  |
|  | 1 | **Pipe Work** |  | 2027-04-07 | 2027-08-01 |  |  |
| CON-LEG101-RA-1120 |  | Excavation for Secondary Irrigation [Roundabout : 01 ] | 11d | 2027-04-07 | 2027-04-19 | CON-LEG101-LR-6230, CON-LEG101-LR-6180, CON-LEG101-SD-1000, CON-LEG101-SD-1010, CON-LEG101-SD-1020, CON-LEG101-SD-1030, CON-LEG101-LR-4870, CON-LEG101-EN-3340, CON-LEG101-EN-3440 | 0d |
| CON-LEG101-RA-1150 |  | Sand bedding for Secondary Irrigation [Roundabout : 01 ] | 11d | 2027-04-20 | 2027-05-02 | CON-LEG101-RA-1120 | 0d |
| CON-LEG101-RA-1180 |  | Installation of Pipe for Secondary Irrigation [Roundabout : 01 ] | 11d | 2027-05-03 | 2027-05-19 | CON-LEG101-PR-3980, CON-LEG101-RA-1150, CON-LEG101-PR-3940 | 0d |
| CON-LEG101-RA-1210 |  | Sand Surround for Secondary Irrigation [Roundabout : 01 ] | 14d | 2027-05-20 | 2027-06-05 | CON-LEG101-RA-1180 | 9d |
| CON-LEG101-RA-1240 |  | Installation of Micron Marker Magnetic Tape [Roundabout : 01 ] | 14d | 2027-06-06 | 2027-06-21 | CON-LEG101-RA-1210 | 9d |
| CON-LEG101-RA-1270 |  | Backfilling to Subgrade Elevation [Roundabout : 01 ] | 14d | 2027-06-22 | 2027-07-07 | CON-LEG101-RA-1240, CON-LEG101-EN-3440 | 9d |
| CON-LEG101-RA-1390 |  | Installation of tubing for risers connections from laterals [Roundabout : 01 ] | 21d | 2027-07-08 | 2027-08-01 | CON-LEG101-RA-1270, CON-LEG101-PR-2770 | 9d |
|  | 2 | **Valves and Controller** |  | 2027-05-20 | 2027-07-17 |  |  |
| CON-LEG101-RA-1300 |  | Installation of Electrical Solenoid Valve [Roundabout : 01 ] | 5d | 2027-05-20 | 2027-05-25 | CON-LEG101-RA-1180, CON-LEG101-PR-3020 | 0d |
| CON-LEG101-RA-1330 |  | Installation of quick coupler valve [Roundabout : 01 ] | 5d | 2027-05-26 | 2027-05-31 | CON-LEG101-RA-1300, CON-LEG101-PR-3030 | 0d |
| CON-LEG101-RA-1360 |  | Installation of a Flush valve [Roundabout : 01 ] | 11d | 2027-06-01 | 2027-06-13 | CON-LEG101-PR-2760, CON-LEG101-RA-1330, CON-LEG101-PR-3110 | 0d |
| CON-LEG101-RA-1420 |  | Install single station decoder for valve connection [Roundabout : 01 ] | 14d | 2027-06-15 | 2027-06-30 | CON-LEG101-PR-2830, CON-LEG101-RA-1360, CON-LEG101-PR-3150 | 10d |
| CON-LEG101-RA-1450 |  | Installation of Decoder cables 12 AWG between valves and controllers [Roundabout : 01 ] | 14d | 2027-07-01 | 2027-07-17 | CON-LEG101-PR-2790, CON-LEG101-RA-1420, CON-LEG101-PR-3050 | 10d |
|  | 3 | **Curbs and edging** |  | 2027-07-18 | 2027-07-31 |  |  |
| CON-LEG101-RA-1090 |  | Installation of Curbs and edging [Roundabout : 01 ] | 12d | 2027-07-18 | 2027-07-31 | CON-LEG101-RA-1450, CON-LEG101-PR-3070, CON-LEG101-EN-3400 | 10d |
|  | 2 | **Landscape** |  | 2027-08-02 | 2027-10-07 |  |  |
| CON-LEG101-RA-1000 |  | Site preparation for Planting Area [Roundabout : 01 ] | 19d | 2027-08-02 | 2027-08-23 | CON-LEG101-RA-1090, CON-LEG101-EN-3370, CON-LEG101-EN-3440, CON-LEG101-RA-1390 | 9d |
| CON-LEG101-RA-1030 |  | Placing Agricutural Soil [Roundabout : 01 ] | 19d | 2027-08-24 | 2027-09-14 | CON-LEG101-RA-1000, CON-LEG101-EN-3380, CON-LEG101-MS-1010 | 9d |
| CON-LEG101-RA-1060 |  | Planting Shrubs And Ground Cover [Roundabout : 01 ] | 19d | 2027-09-15 | 2027-10-07 | CON-LEG101-RA-1030, CON-LEG101-EN-3390, CON-LEG101-PR-3060, CON-LEG101-MS-1010 | 9d |
|  | 4 | **Roundabout - 02 (L01 & L03)** |  | 2027-06-14 | 2027-10-18 |  |  |
|  | 1 | **Irrigation Works** |  | 2027-06-14 | 2027-10-04 |  |  |
|  | 1 | **Secondary Irrigation** |  | 2027-06-14 | 2027-10-04 |  |  |
|  | 1 | **Pipe Work** |  | 2027-06-14 | 2027-10-04 |  |  |
| CON-LEG101-RA-1130 |  | Excavation for Secondary Irrigation [Roundabout : 02 ] | 11d | 2027-06-14 | 2027-06-26 | CON-LEG101-RA-1360, CON-LEG101-LR-6180, CON-LEG101-LR-6190, CON-LEG101-LR-6220, CON-LEG101-SD-1000, CON-LEG101-SD-1010, CON-LEG101-SD-1020, CON-LEG101-SD-1030, CON-LEG101-EN-3340, CON-LEG101-EN-3440, CON-LEG101-RA-1120 | 0d |
| CON-LEG101-RA-1160 |  | Sand bedding for Secondary Irrigation [Roundabout : 02 ] | 11d | 2027-06-27 | 2027-07-08 | CON-LEG101-RA-1130 | 0d |
| CON-LEG101-RA-1190 |  | Installation of Pipe for Secondary Irrigation [Roundabout : 02 ] | 11d | 2027-07-10 | 2027-07-21 | CON-LEG101-PR-3980, CON-LEG101-RA-1160, CON-LEG101-PR-3940 | 0d |
| CON-LEG101-RA-1220 |  | Sand Surround for Secondary Irrigation [Roundabout : 02 ] | 14d | 2027-07-22 | 2027-08-07 | CON-LEG101-RA-1190 | 12d |
| CON-LEG101-RA-1250 |  | Installation of Micron Marker Magnetic Tape [Roundabout : 02 ] | 14d | 2027-08-08 | 2027-08-23 | CON-LEG101-RA-1220 | 12d |
| CON-LEG101-RA-1280 |  | Backfilling to Subgrade Elevation [Roundabout : 02 ] | 14d | 2027-08-24 | 2027-09-08 | CON-LEG101-RA-1250, CON-LEG101-EN-3440 | 12d |
| CON-LEG101-RA-1400 |  | Installation of tubing for risers connections from laterals [Roundabout : 02 ] | 21d | 2027-09-09 | 2027-10-04 | CON-LEG101-RA-1280, CON-LEG101-PR-2770 | 12d |
|  | 2 | **Valves and Controller** |  | 2027-07-22 | 2027-09-08 |  |  |
| CON-LEG101-RA-1310 |  | Installation of Electrical Solenoid Valve [Roundabout : 02 ] | 5d | 2027-07-22 | 2027-07-27 | CON-LEG101-RA-1190, CON-LEG101-PR-3020 | 0d |
| CON-LEG101-RA-1340 |  | Installation of quick coupler valve [Roundabout : 02 ] | 5d | 2027-07-28 | 2027-08-02 | CON-LEG101-RA-1310, CON-LEG101-PR-3030 | 0d |
| CON-LEG101-RA-1370 |  | Installation of a Flush valve [Roundabout : 02 ] | 11d | 2027-08-03 | 2027-08-15 | CON-LEG101-PR-2760, CON-LEG101-RA-1340, CON-LEG101-PR-3110 | 0d |

| ID | WBS | Task | Duration | Start | Finish | Predecessors | Total float |
| --- | --- | --- | --- | --- | --- | --- | --- |
| CON-LEG101-RA-1430 |  | Install single station decoder for valve connection [Roundabout : 02 ] | 7d | 2027-08-16 | 2027-08-23 | CON-LEG101-PR-2830, CON-LEG101-RA-1370, CON-LEG101-PR-3150 | 0d |
| CON-LEG101-RA-1460 |  | Installation of Decoder cables 12 AWG between valves and controllers [Roundabout : 02 ] | 14d | 2027-08-24 | 2027-09-08 | CON-LEG101-PR-2790, CON-LEG101-RA-1430, CON-LEG101-PR-3050 | 0d |
|  | 3 | **Curbs and edging** |  | 2027-09-09 | 2027-09-12 |  |  |
| CON-LEG101-RA-1100 |  | Installation of Curbs and edging [Roundabout : 02 ] | 3d | 2027-09-09 | 2027-09-12 | CON-LEG101-RA-1460, CON-LEG101-PR-3070, CON-LEG101-EN-3400 | 0d |
|  | 2 | **Landscape** |  | 2027-09-13 | 2027-10-18 |  |  |
| CON-LEG101-RA-1010 |  | Site preparation for Planting Area [Roundabout : 02 ] | 10d | 2027-09-13 | 2027-09-25 | CON-LEG101-RA-1100, CON-LEG101-EN-3370, CON-LEG101-EN-3440 | 0d |
| CON-LEG101-RA-1040 |  | Placing Agricutural Soil [Roundabout : 02 ] | 10d | 2027-09-26 | 2027-10-06 | CON-LEG101-RA-1010, CON-LEG101-EN-3380 | 0d |
| CON-LEG101-RA-1070 |  | Planting Shrubs And Ground Cover [Roundabout : 02 ] | 10d | 2027-10-07 | 2027-10-18 | CON-LEG101-RA-1040, CON-LEG101-EN-3390, CON-LEG101-PR-3060 | 0d |
|  | 2 | **Roundabout - 03 (L03 & L05)** |  | 2027-06-27 | 2027-10-18 |  |  |
|  | 1 | **Irrigation Works** |  | 2027-06-27 | 2027-10-03 |  |  |
|  | 1 | **Secondary Irrigation** |  | 2027-06-27 | 2027-10-03 |  |  |
|  | 1 | **Pipe Work** |  | 2027-06-27 | 2027-10-03 |  |  |
| CON-LEG101-RA-1140 |  | Excavation for Secondary Irrigation [Roundabout : 03 ] | 11d | 2027-06-27 | 2027-07-08 | CON-LEG101-LR-6220, CON-LEG101-LR-6240, CON-LEG101-SD-1000, CON-LEG101-SD-1010, CON-LEG101-SD-1020, CON-LEG101-SD-1030, CON-LEG101-EN-3340, CON-LEG101-EN-3440, CON-LEG101-RA-1130 | 0d |
| CON-LEG101-RA-1170 |  | Sand bedding for Secondary Irrigation [Roundabout : 03 ] | 10d | 2027-07-10 | 2027-07-20 | CON-LEG101-RA-1140 | 0d |
| CON-LEG101-RA-1200 |  | Installation of Pipe for Secondary Irrigation [Roundabout : 03 ] | 11d | 2027-07-21 | 2027-08-02 | CON-LEG101-RA-1170, CON-LEG101-PR-3940 | 0d |
| CON-LEG101-RA-1230 |  | Sand Surround for Secondary Irrigation [Roundabout : 03 ] | 11d | 2027-08-03 | 2027-08-15 | CON-LEG101-RA-1200 | 13d |
| CON-LEG101-RA-1260 |  | Installation of Micron Marker Magnetic Tape [Roundabout : 03 ] | 11d | 2027-08-16 | 2027-08-28 | CON-LEG101-RA-1230 | 13d |
| CON-LEG101-RA-1290 |  | Backfilling to Subgrade Elevation [Roundabout : 03 ] | 11d | 2027-08-29 | 2027-09-09 | CON-LEG101-RA-1260, CON-LEG101-EN-3440 | 13d |
| CON-LEG101-RA-1410 |  | Installation of tubing for risers connections from laterals [Roundabout : 03 ] | 19d | 2027-09-11 | 2027-10-03 | CON-LEG101-RA-1290, CON-LEG101-PR-2770 | 13d |
|  | 2 | **Valves and Controller** |  | 2027-08-03 | 2027-09-20 |  |  |
| CON-LEG101-RA-1320 |  | Installation of Electrical Solenoid Valve [Roundabout : 03 ] | 5d | 2027-08-03 | 2027-08-08 | CON-LEG101-RA-1200, CON-LEG101-PR-3020 | 0d |
| CON-LEG101-RA-1350 |  | Installation of quick coupler valve [Roundabout : 03 ] | 5d | 2027-08-09 | 2027-08-14 | CON-LEG101-RA-1320, CON-LEG101-PR-3030 | 0d |
| CON-LEG101-RA-1380 |  | Installation of a Flush valve [Roundabout : 03 ] | 11d | 2027-08-15 | 2027-08-26 | CON-LEG101-PR-2760, CON-LEG101-RA-1350, CON-LEG101-PR-3110 | 0d |
| CON-LEG101-RA-1440 |  | Install single station decoder for valve connection [Roundabout : 03 ] | 7d | 2027-08-28 | 2027-09-04 | CON-LEG101-PR-2830, CON-LEG101-RA-1380, CON-LEG101-PR-3150 | 0d |
| CON-LEG101-RA-1470 |  | Installation of Decoder cables 12 AWG between valves and controllers [Roundabout : 03 ] | 14d | 2027-09-05 | 2027-09-20 | CON-LEG101-PR-2790, CON-LEG101-RA-1440, CON-LEG101-PR-3050 | 0d |
|  | 3 | **Curbs and edging** |  | 2027-09-21 | 2027-09-25 |  |  |
| CON-LEG101-RA-1110 |  | Installation of Curbs and edging [Roundabout : 03 ] | 3d | 2027-09-21 | 2027-09-25 | CON-LEG101-RA-1470, CON-LEG101-PR-3070, CON-LEG101-EN-3400 | 0d |
|  | 2 | **Landscape** |  | 2027-09-26 | 2027-10-18 |  |  |
| CON-LEG101-RA-1020 |  | Site preparation for Planting Area [Roundabout : 03 ] | 7d | 2027-09-26 | 2027-10-03 | CON-LEG101-RA-1110, CON-LEG101-EN-3370, CON-LEG101-EN-3440 | 0d |
| CON-LEG101-RA-1050 |  | Placing Agricutural Soil [Roundabout : 03 ] | 6d | 2027-10-04 | 2027-10-10 | CON-LEG101-RA-1020, CON-LEG101-EN-3380 | 0d |
| CON-LEG101-RA-1080 |  | Planting Shrubs And Ground Cover [Roundabout : 03 ] | 7d | 2027-10-11 | 2027-10-18 | CON-LEG101-RA-1050, CON-LEG101-EN-3390, CON-LEG101-PR-3060 | 0d |
|  | 6 | **Testing & Commissioning** |  | 2027-08-04 | 2027-10-26 |  |  |
| CON-LEG101-TC-1110 |  | Test for Road Works | 8d | 2027-08-04 | 2027-08-12 | CON-LEG101-LR-6780, CON-LEG101-LR-6680, CON-LEG101-LR-6180, CON-LEG101-LR-6280, CON-LEG101-LR-6380, CON-LEG101-LR-6080, CON-LEG101-LR-6800, CON-LEG101-LR-6700, CON-LEG101-LR-6200, CON-LEG101-LR-6300, CON-LEG101-LR-6400, CON-LEG101-LR-6100, CON-LEG101-LR-6110, CON-LEG101-LR-6410, CON-LEG101-LR-6310, CON-LEG101-LR-6210, CON-LEG101-LR-6710, CON-LEG101-LR-6810, CON-LEG101-LR-6120, CON-LEG101-LR-6420, CON-LEG101-LR-6320, CON-LEG101-LR-6220, CON-LEG101-LR-6720, CON-LEG101-LR-6820, CON-LEG101-LR-6130, CON-LEG101-LR-6430, CON-LEG101-LR-6330, CON-LEG101-LR-6230, CON-LEG101-LR-6730, CON-LEG101-LR-6830, CON-LEG101-LR-6140, CON-LEG101-LR-6440, CON-LEG101-LR-6340, CON-LEG101-LR-6240, CON-LEG101-LR-6740, CON-LEG101-LR-6840, CON-LEG101-LR-6150, CON-LEG101-LR-6450, CON-LEG101-LR-6350, CON-LEG101-LR-6250, CON-LEG101-LR-6750, CON-LEG101-LR-6850, CON-LEG101-LR-6160, CON-LEG101-LR-6460, CON-LEG101-LR-6360, CON-LEG101-LR-6260, CON-LEG101-LR-6760, CON-LEG101-LR-6860, CON-LEG101-LR-6170, CON-LEG101-LR-6470, CON-LEG101-LR-6370, CON-LEG101-LR-6270, CON-LEG101-LR-6770, CON-LEG101-LR-6870, CON-LEG101-MS-1010 | 0d |
| CON-LEG101-TC-1020 |  | Test for Public Water Utility Distribution | 8d | 2027-08-14 | 2027-08-22 | CON-LEG101-OBA-1410, CON-LEG101-OBA-1450, CON-LEG101-OBA-1440, CON-LEG101-OBA-1340, CON-LEG101-OBA-1430, CON-LEG101-OBA-1420, CON-LEG101-LR-1240 SS, CON-LEG101-PR-1960, CON-LEG101-OBA-1510, CON-LEG101-TC-1110, CON-LEG101-LR-10740, CON-LEG101-LR-1250, CON-LEG101-LR-10750, CON-LEG101-LR-1260, CON-LEG101-LR-10760, CON-LEG101-LR-1270, CON-LEG101-LR-10770, CON-LEG101-LR-1030, CON-LEG101-LR-10780, CON-LEG101-LR-10790, CON-LEG101-LR-1280, CON-LEG101-LR-10800, CON-LEG101-LR-10810, CON-LEG101-LR-1070, CON-LEG101-LR-10820, CON-LEG101-LR-1080, CON-LEG101-LR-10830, CON-LEG101-LR-1090, CON-LEG101-OBA-1220 | 0d |
| CON-LEG101-TC-1040 |  | Test for Sanitary Sewerage | 8d | 2027-08-14 | 2027-08-22 | CON-LEG101-TC-1110, CON-LEG101-LR-3410, CON-LEG101-LR-3500, CON-LEG101-LR-3420, CON-LEG101-LR-3510, CON-LEG101-LR-3430, CON-LEG101-LR-3520, CON-LEG101-LR-3440, CON-LEG101-LR-3530, CON-LEG101-LR-3440 FF, CON-LEG101-LR-3530 FF, CON-LEG101-LR-3450, CON-LEG101-LR-3540, CON-LEG101-LR-3460, CON-LEG101-LR-3550, CON-LEG101-LR-3480, CON-LEG101-LR-3560, CON-LEG101-LR-3490, CON-LEG101-LR-3570, CON-LEG101-OBA-1140, CON-LEG101-OBA-1150, CON-LEG101-TC-1020 SS | 0d |
| CON-LEG101-TC-1050 |  | Test for Stormwater Utilities | 8d | 2027-08-23 | 2027-08-31 | CON-LEG101-TC-1040, CON-LEG101-LR-4200, CON-LEG101-LR-4320, CON-LEG101-LR-4210, CON-LEG101-LR-4330, CON-LEG101-LR-4440, CON-LEG101-LR-4220, CON-LEG101-LR-4340, CON-LEG101-LR-4450, CON-LEG101-LR-4230, CON-LEG101-LR-4350, CON-LEG101-LR-4460, CON-LEG101-LR-4230 FF, CON-LEG101-LR-4350 FF, CON-LEG101-LR-4460 FF, CON-LEG101-LR-4240, CON-LEG101-LR-4250, CON-LEG101-LR-4370, CON-LEG101-LR-4470, CON-LEG101-LR-4260, CON-LEG101-LR-4380, CON-LEG101-LR-4480, CON-LEG101-LR-4280, CON-LEG101-LR-4390, CON-LEG101-LR-4490, CON-LEG101-LR-4290, CON-LEG101-LR-4400, CON-LEG101-LR-4500, CON-LEG101-LR-4300, CON-LEG101-LR-4410, CON-LEG101-LR-4510 | 0d |
| CON-LEG101-TC-1060 |  | Test for Bridge Work | 8d | 2027-09-01 | 2027-09-09 | CON-LEG101-TC-1050, CON-LEG101-BR-1250, CON-LEG101-BR-1020, CON-LEG101-BR-1030, CON-LEG101-BR-1130, CON-LEG101-BR-1060, CON-LEG101-BR-1090, CON-LEG101-BR-1220, CON-LEG101-BR-1230, CON-LEG101-MS-1020 | 0d |
| CON-LEG101-TC-1010 |  | Test for Electrical Network | 8d | 2027-09-11 | 2027-09-19 | CON-LEG101-TC-1060, CON-LEG101-LR-7680, CON-LEG101-LR-8760, CON-LEG101-LR-7690, CON-LEG101-LR-8770, CON-LEG101-LR-7700, CON-LEG101-LR-8780, CON-LEG101-LR-7710, CON-LEG101-LR-8790, CON-LEG101-LR-7710 FF, CON-LEG101-LR-8790 FF, CON-LEG101-LR-7720, CON-LEG101-LR-8800, CON-LEG101-LR-7730, CON-LEG101-LR-8810, CON-LEG101-LR-7740, CON-LEG101-LR-8820, CON-LEG101-LR-7750, CON-LEG101-LR-8050, CON-LEG101-LR-7760, CON-LEG101-LR-8060, CON-LEG101-LR-8500 | 0d |
| CON-LEG101-TC-1030 |  | Test for TSE Network | 7d | 2027-09-20 | 2027-09-28 | CON-LEG101-LR-2470, CON-LEG101-TC-1010, CON-LEG101-LR-2630, CON-LEG101-PR-1970, CON-LEG101-LR-2070, CON-LEG101-LR-2680, CON-LEG101-LR-2090, CON-LEG101-LR-2690, CON-LEG101-LR-2100, CON-LEG101-LR-2110, CON-LEG101-LR-2710, CON-LEG101-LR-2110 FF, CON-LEG101-LR-2710 FF, CON-LEG101-LR-2120, CON-LEG101-LR-2720, CON-LEG101-LR-2130, CON-LEG101-LR-2730, CON-LEG101-LR-2140, CON-LEG101-LR-2740, CON-LEG101-LR-2150, CON-LEG101-LR-2530, CON-LEG101-LR-2160, CON-LEG101-LR-2540, CON-LEG101-LR-2170, CON-LEG101-LR-2750, CON-LEG101-OBA-1060, CON-LEG101-OBA-1070 | 0d |
| CON-LEG101-TC-1100 |  | Test for Road Lighting | 6d | 2027-09-29 | 2027-10-05 | CON-LEG101-LR-8330, CON-LEG101-TC-1030, CON-LEG101-LR-8430, CON-LEG101-LR-8440, CON-LEG101-LR-8450, CON-LEG101-LR-8460, CON-LEG101-LR-8370, CON-LEG101-LR-8380, CON-LEG101-LR-8390, CON-LEG101-LR-8400, CON-LEG101-LR-8410, CON-LEG101-LR-8470 | 0d |
| CON-LEG101-TC-1000 |  | Test for Telecommunications Work | 6d | 2027-10-06 | 2027-10-12 | CON-LEG101-TC-1100, CON-LEG101-LR-9330, CON-LEG101-LR-9340, CON-LEG101-LR-9350, CON-LEG101-LR-9360, CON-LEG101-LR-9360 FF, CON-LEG101-LR-9370, CON-LEG101-LR-9380, CON-LEG101-LR-9390, CON-LEG101-LR-9400, CON-LEG101-LR-9410, CON-LEG101-LR-9420 | 0d |
| CON-LEG101-TC-1070 |  | Test for CCTV feeding system and GSM | 6d | 2027-10-13 | 2027-10-19 | CON-LEG101-TC-1000, CON-LEG101-LR-9940, CON-LEG101-LR-9950, CON-LEG101-LR-9960, CON-LEG101-LR-9970, CON-LEG101-LR-9980, CON-LEG101-LR-9990, CON-LEG101-LR-10000, CON-LEG101-LR-10010, CON-LEG101-LR-10020, CON-LEG101-LR-10030 | 0d |
| CON-LEG101-TC-1080 |  | Test for Fence & Gate | 6d | 2027-10-19 | 2027-10-25 | CON-LEG101-FG-1340, CON-LEG101-FG-1350, CON-LEG101-FG-1360, CON-LEG101-FG-1270, CON-LEG101-FG-1370, CON-LEG101-FG-1380, CON-LEG101-MS-1040 | 0d |
| CON-LEG101-TC-1090 |  | Test for Irrigation and Landscape | 7d | 2027-10-19 | 2027-10-26 | CON-LEG101-TC-1000 SS, CON-LEG101-LR-5410, CON-LEG101-LR-5520, CON-LEG101-LR-4790, CON-LEG101-LR-4720, CON-LEG101-LR-5420, CON-LEG101-LR-5530, CON-LEG101-LR-4800, CON-LEG101-LR-4730, CON-LEG101-LR-5430, CON-LEG101-LR-5540, CON-LEG101-LR-4810, CON-LEG101-LR-4740, CON-LEG101-LR-5440, CON-LEG101-LR-5550, CON-LEG101-LR-4830, CON-LEG101-LR-4750, CON-LEG101-LR-5450, CON-LEG101-LR-5560, CON-LEG101-LR-4840, CON-LEG101-LR-4760, CON-LEG101-LR-5460, CON-LEG101-LR-5570, CON-LEG101-LR-4850, CON-LEG101-LR-4770, CON-LEG101-RA-1390, CON-LEG101-RA-1450, CON-LEG101-RA-1090, CON-LEG101-RA-1060, CON-LEG101-RA-1400, CON-LEG101-RA-1460, CON-LEG101-RA-1100, CON-LEG101-RA-1070, CON-LEG101-RA-1410, CON-LEG101-RA-1470, CON-LEG101-RA-1110, CON-LEG101-RA-1080, CON-LEG101-MS-1030 | 0d |
| CON-LEG101-TC-1120 |  | Test for Earthing System | 6d | 2027-10-20 | 2027-10-26 | CON-LEG101-LR-8330, CON-LEG101-TC-1070, CON-LEG101-LR-15130, CON-LEG101-LR-15140, CON-LEG101-LR-15150, CON-LEG101-LR-15160, CON-LEG101-LR-15170, CON-LEG101-LR-8280, CON-LEG101-LR-8290, CON-LEG101-LR-8300, CON-LEG101-LR-8310, CON-LEG101-LR-8320 | 0d |
|  | 7 | **Project Close-out** |  | 2027-08-14 | 2027-11-18 |  |  |
|  | 1 | **As-Built DWGs** |  | 2027-08-14 | 2027-11-07 |  |  |
|  | 1 | **As-Built DWGs Submittal** |  | 2027-08-14 | 2027-11-01 |  |  |
| CON-LEG101-ABS-1110 |  | As-Built DWGs Submittal for Road Works | 12d | 2027-08-14 | 2027-08-26 | CON-LEG101-TC-1110 | 11d |
| CON-LEG101-ABS-1020 |  | As-Built DWGs Submittal for Public Water Utility Distribution | 12d | 2027-08-23 | 2027-09-05 | CON-LEG101-TC-1020 | 13d |
| CON-LEG101-ABS-1050 |  | As-Built DWGs Submittal for Stormwater Utilities | 12d | 2027-09-01 | 2027-09-14 | CON-LEG101-TC-1050 | 11d |
| CON-LEG101-ABS-1060 |  | As-Built DWGs Submittal for Bridge Work | 12d | 2027-09-11 | 2027-09-25 | CON-LEG101-TC-1060 | 17d |
| CON-LEG101-ABS-1040 |  | As-Built DWGs Submittal for Sanitary Sewerage | 12d | 2027-09-15 | 2027-09-29 | CON-LEG101-TC-1040, CON-LEG101-ABS-1020, CON-LEG101-ABS-1050 | 11d |
| CON-LEG101-ABS-1030 |  | As-Built DWGs Submittal for TSE Network | 12d | 2027-09-29 | 2027-10-12 | CON-LEG101-TC-1030 | 2d |
| CON-LEG101-ABS-1010 |  | As-Built DWGs Submittal for Electrical Network | 12d | 2027-09-30 | 2027-10-13 | CON-LEG101-TC-1010, CON-LEG101-ABS-1040 | 11d |
| CON-LEG101-ABS-1100 |  | As-Built DWGs Submittal for Road Lighting | 12d | 2027-10-06 | 2027-10-19 | CON-LEG101-TC-1100 | 6d |
| CON-LEG101-ABS-1000 |  | As-Built DWGs Submittal for Telecommunications Work | 12d | 2027-10-13 | 2027-10-26 | CON-LEG101-TC-1000 | 2d |
| CON-LEG101-ABS-1070 |  | As-Built DWGs Submittal for CCTV feeding system and GSM | 8d | 2027-10-20 | 2027-10-28 | CON-LEG101-TC-1070 | 3d |
| CON-LEG101-ABS-1080 |  | As-Built DWGs Submittal for Fence & Gate | 6d | 2027-10-26 | 2027-11-01 | CON-LEG101-TC-1080, CON-LEG101-FG-1380 | 0d |
| CON-LEG101-ABS-1090 |  | As-Built DWGs Submittal for Irrigation and Landscape | 5d | 2027-10-27 | 2027-11-01 | CON-LEG101-TC-1090 | 0d |
| CON-LEG101-ABS-1120 |  | As-Built DWGs Submittal for Earthing System | 5d | 2027-10-27 | 2027-11-01 | CON-LEG101-TC-1120 | 0d |
|  | 2 | **As-Built DWGs Approval** |  | 2027-08-28 | 2027-11-07 |  |  |
| CON-LEG101-ABA-1110 |  | As- Built DWGs Approval for Road Works | 10d | 2027-08-28 | 2027-09-07 | CON-LEG101-ABS-1110 | 11d |
| CON-LEG101-ABA-1020 |  | As- Built DWGs Approval for Public Water Utility Distribution | 10d | 2027-09-08 | 2027-09-19 | CON-LEG101-ABS-1020, CON-LEG101-ABA-1110 | 11d |
| CON-LEG101-ABA-1050 |  | As- Built DWGs Approval for Stormwater Utilities | 10d | 2027-09-20 | 2027-10-02 | CON-LEG101-ABS-1050, CON-LEG101-ABA-1020 | 11d |
| CON-LEG101-ABA-1060 |  | As- Built DWGs Approval for Bridge Work | 10d | 2027-10-03 | 2027-10-13 | CON-LEG101-ABS-1060, CON-LEG101-ABA-1050 | 11d |
| CON-LEG101-ABA-1030 |  | As- Built DWGs Approval for TSE Network | 10d | 2027-10-13 | 2027-10-24 | CON-LEG101-ABS-1030 | 2d |
| CON-LEG101-ABA-1100 |  | As- Built DWGs Approval for Road Lighting | 10d | 2027-10-20 | 2027-10-31 | CON-LEG101-ABS-1100 | 6d |
| CON-LEG101-ABA-1010 |  | As- Built DWGs Approval for Electrical Network | 10d | 2027-10-25 | 2027-11-04 | CON-LEG101-ABS-1010, CON-LEG101-ABA-1060, CON-LEG101-ABA-1030 | 2d |
| CON-LEG101-ABA-1040 |  | As- Built DWGs Approval for Sanitary Sewerage | 10d | 2027-10-25 | 2027-11-04 | CON-LEG101-ABS-1040, CON-LEG101-ABA-1050, CON-LEG101-ABA-1060, CON-LEG101-ABA-1030 | 2d |

| ID | WBS | Task | Duration | Start | Finish | Predecessors | Total float |
| --- | --- | --- | --- | --- | --- | --- | --- |
| CON-LEG101-ABA-1000 |  | As- Built DWGs Approval for Telecommunications Work | 8d | 2027-10-27 | 2027-11-04 | CON-LEG101-ABS-1000 | 2d |
| CON-LEG101-ABA-1070 |  | As- Built DWGs Approval for CCTV feeding system and GSM | 5d | 2027-10-30 | 2027-11-03 | CON-LEG101-ABS-1070 | 3d |
| CON-LEG101-ABA-1080 |  | As- Built DWGs Approval for Fence & Gate | 5d | 2027-11-02 | 2027-11-07 | CON-LEG101-ABS-1080 | 0d |
| CON-LEG101-ABA-1090 |  | As- Built DWGs Approval for Irrigation and Landscape | 5d | 2027-11-02 | 2027-11-07 | CON-LEG101-ABS-1090 | 0d |
| CON-LEG101-ABA-1120 |  | As- Built DWGs Approval for Earthing System | 5d | 2027-11-02 | 2027-11-07 | CON-LEG101-ABS-1120 | 0d |
|  | 2 | **Demobilization** |  | 2027-11-08 | 2027-11-18 |  |  |
| CON-LEG101-DM-1000 |  | Demobilization of Manpower | 5d | 2027-11-08 | 2027-11-13 | CON-LEG101-ABA-1000, CON-LEG101-ABA-1010, CON-LEG101-ABA-1020, CON-LEG101-ABA-1030, CON-LEG101-ABA-1040, CON-LEG101-ABA-1050, CON-LEG101-ABA-1060, CON-LEG101-ABA-1070, CON-LEG101-ABA-1080, CON-LEG101-ABA-1090, CON-LEG101-ABA-1100, CON-LEG101-ABA-1110, CON-LEG101-ABA-1120 | 0d |
| CON-LEG101-DM-1010 |  | Removal of Equipment from Site | 5d | 2027-11-08 | 2027-11-13 | CON-LEG101-ABA-1000, CON-LEG101-ABA-1010, CON-LEG101-ABA-1020, CON-LEG101-ABA-1030, CON-LEG101-ABA-1040, CON-LEG101-ABA-1050, CON-LEG101-ABA-1060, CON-LEG101-ABA-1070, CON-LEG101-ABA-1080, CON-LEG101-ABA-1090, CON-LEG101-ABA-1100, CON-LEG101-ABA-1110, CON-LEG101-ABA-1120 | 0d |
| CON-LEG101-DM-1020 |  | Site Clean Up | 5d | 2027-11-08 | 2027-11-13 | CON-LEG101-ABA-1000, CON-LEG101-ABA-1010, CON-LEG101-ABA-1020, CON-LEG101-ABA-1030, CON-LEG101-ABA-1040, CON-LEG101-ABA-1050, CON-LEG101-ABA-1060, CON-LEG101-ABA-1070, CON-LEG101-ABA-1080, CON-LEG101-ABA-1090, CON-LEG101-ABA-1100, CON-LEG101-ABA-1110, CON-LEG101-ABA-1120 | 0d |
| CON-LEG101-DM-1030 |  | Removal of Site Offices and Structures | 5d | 2027-11-08 | 2027-11-13 | CON-LEG101-ABA-1000, CON-LEG101-ABA-1010, CON-LEG101-ABA-1020, CON-LEG101-ABA-1030, CON-LEG101-ABA-1040, CON-LEG101-ABA-1050, CON-LEG101-ABA-1060, CON-LEG101-ABA-1070, CON-LEG101-ABA-1080, CON-LEG101-ABA-1090, CON-LEG101-ABA-1100, CON-LEG101-ABA-1110, CON-LEG101-ABA-1120 | 0d |
| CON-LEG101-DM-1040 |  | Restoration of Ground Surfaces | 5d | 2027-11-14 | 2027-11-18 | CON-LEG101-DM-1030, CON-LEG101-DM-1020, CON-LEG101-DM-1010, CON-LEG101-DM-1000 | 0d |

## Version 2 (data date 2026-10-06, saved 2026-10-06, file 02. JDH1-02-003 -ENJ-WPR-046-06-10-2026 Update Schedule.xer)

Last finish 2027-11-18 → 2028-05-06 (+170d). Complete tasks 0 → 1243.

Added:

| ID | Task | Duration | Start | Finish | Predecessors | Resources |
| --- | --- | --- | --- | --- | --- | --- |
| A | Catch | 14d | 2027-12-18 | 2028-01-02 | CON-LEG101-PR-2790, CON-LEG101-RA-1420, CON-LEG101-PR-3050 | Supply and installation of Decoder cables 12 AWG between valves and controllers, The cables shall be pulled through 32? UPVC conduit and inspection 10" round valve box every 100 meters, as per standard specification and drawings [432.15]; Excavator [88.57 h]; Labor [200 h]; Skilled Labor [100 h]; Eq. Operator [100 h]; Pipe Fitter [100 h] |

Removed: CON-LEG101-RA-1450 Installation of Decoder cables 12 AWG between valves and controllers [Roundabout : 01 ]

Changed:

| ID | Task | Start | Finish | Complete | Total float | Predecessors |
| --- | --- | --- | --- | --- | --- | --- |
| 5 | **Milestones** |  | 2027-11-18 → 2028-05-06 (+170d) |  |  |  |
| 1 | **Key Milestones** |  | 2027-11-18 → 2028-05-06 (+170d) |  |  |  |
| CON-LEG101-MS-1090 | Project Commencement Date | 2025-11-19 A | 2025-11-19 A | 0% → 100% | 0d → none |  |
| CON-LEG101-MS-1000 | Project Completion Date | 2027-11-18 → 2028-05-06 (+170d) | 2027-11-18 → 2028-05-06 (+170d) |  | 0d → -145d |  |
| 2 | **Contractual Milestone** |  | 2027-11-18 → 2028-05-06 (+170d) |  |  |  |
| 2 | **Mobilization** | 2025-12-18 → 2026-03-04 (+76d) | 2025-12-18 → 2026-03-04 (+76d) |  |  |  |
| CON-LEG101-MS-1070 | Finish Mobilization | 2025-12-18 → 2026-03-04 A (+76d) | 2025-12-18 → 2026-03-04 A (+76d) | 0% → 100% | 0d → none |  |
| CON-LEG101-MS-1080 | Finish Baseline Time Schedule | 2025-12-18 A | 2025-12-18 A | 0% → 100% | 12d → none |  |
| 4 | **Engineering** | 2026-01-19 → 2026-10-24 (+278d) | 2026-01-19 → 2026-10-24 (+278d) |  |  |  |
| CON-LEG101-MS-1060 | Finish Submission and Approval for Shop Drawings, Method of Statement, Prequalification and Materials | 2026-01-19 → 2026-10-24 (+278d) | 2026-01-19 → 2026-10-24 (+278d) |  | 0d → -43d |  |
| 1 | **Procurement** | 2026-01-19 → 2026-10-18 (+272d) | 2026-01-19 → 2026-10-18 (+272d) |  |  |  |
| CON-LEG101-MS-1100 | Finish PO for Short Lead Item & Long Lead Item | 2026-01-19 → 2026-10-18 (+272d) | 2026-01-19 → 2026-10-18 (+272d) |  | 18d → -37.2d |  |
| 5 | **Construction** | 2026-09-17 → 2027-01-04 (+109d) | 2027-11-18 → 2028-05-06 (+170d) |  |  |  |
| CON-LEG101-MS-1130 | Completion of Deep infrastructure network | 2026-11-18 → 2027-01-04 (+47d) | 2026-11-18 → 2027-01-04 (+47d) |  | 13d → 53.95d |  |
| CON-LEG101-MS-1120 | Completion of Roads & Meduim Voltage | 2026-09-17 → 2027-06-05 (+261d) | 2026-09-17 → 2027-06-05 (+261d) |  | 12d → -96.2d |  |
| CON-LEG101-MS-1140 | Completion of Shallow infrastructure network | 2027-03-18 → 2027-09-18 (+184d) | 2027-03-18 → 2027-09-18 (+184d) |  | 19d → -37.6d |  |
| CON-LEG101-MS-1150 | Completion all Works | 2027-11-18 → 2028-05-06 (+170d) | 2027-11-18 → 2028-05-06 (+170d) |  | 0d → -145d |  |
| 6 | **Monitoring and Control Milestone** | 2027-05-04 → 2027-06-06 (+33d) | 2027-10-18 → 2028-04-04 (+169d) |  |  |  |
| CON-LEG101-MS-1050 | Completion of Outside Boundary Area's Scope (Tie-in Lines) | 2027-05-04 → 2027-06-06 (+33d) | 2027-05-04 → 2027-06-06 (+33d) |  | 7d → 35.18d |  |
| CON-LEG101-MS-1020 | Completion of Bridge | 2027-06-01 → 2027-08-15 (+75d) | 2027-06-01 → 2027-08-15 (+75d) |  | 8d → -55.2d |  |
| CON-LEG101-MS-1040 | Completion of Fence and Gate | 2027-10-18 → 2027-11-20 (+33d) | 2027-10-18 → 2027-11-20 (+33d) |  | 0d → -24.2d |  |
| CON-LEG101-MS-1010 | Completion of Roads Finishing | 2027-08-03 → 2027-11-24 (+113d) | 2027-08-03 → 2027-11-24 (+113d) |  | 0d → -79.4d |  |
| CON-LEG101-MS-1030 | Completion of Roundabout & Landscape works | 2027-10-18 → 2028-04-04 (+169d) | 2027-10-18 → 2028-04-04 (+169d) |  | 0d → -145d | CON-LEG101-RA-1390, Installation of Decoder cables 12 AWG between valves and controllers [Roundabout : 01 ], CON-LEG101-RA-1090, CON-LEG101-RA-1060, CON-LEG101-RA-1400, CON-LEG101-RA-1460, CON-LEG101-RA-1100, CON-LEG101-RA-1070, CON-LEG101-RA-1410, CON-LEG101-RA-1470, CON-LEG101-RA-1110, CON-LEG101-RA-1080 → CON-LEG101-RA-1390, A, CON-LEG101-RA-1090, CON-LEG101-RA-1060, CON-LEG101-RA-1400, CON-LEG101-RA-1460, CON-LEG101-RA-1100, CON-LEG101-RA-1070, CON-LEG101-RA-1410, CON-LEG101-RA-1470, CON-LEG101-RA-1110, CON-LEG101-RA-1080 |
| 2 | **Mobilization** |  | 2025-12-18 → 2026-03-04 (+76d) |  |  |  |
| CON-LEG101-TP-1330 | Site Survey Works | 2025-11-19 A | 2025-11-27 A | 0% → 100% | 0d → none |  |
| 2 | **Site Facilities & Offices** |  | 2025-12-18 → 2026-01-12 (+25d) |  |  |  |
| CON-LEG101-MB-1000 | Mobilization of Manpower | 2025-12-15 → 2025-11-19 A (-26d) | 2025-12-18 → 2025-11-29 A (-19d) | 0% → 100% | 0d → none |  |
| CON-LEG101-MB-1020 | Mobilization of Equipment | 2025-12-13 → 2025-11-19 A (-24d) | 2025-12-18 → 2025-11-29 A (-19d) | 0% → 100% | 0d → none |  |
| CON-LEG101-MB-1160 | Construct Site Offices & Storage | 2025-11-30 → 2025-11-19 A (-11d) | 2025-12-18 → 2026-01-12 A (+25d) | 0% → 100% | 0d → none |  |
| CON-LEG101-MB-1340 | Site Layout Plan | 2025-11-19 A | 2025-11-25 A | 0% → 100% | 0d → none |  |
| CON-LEG101-MB-1120 | Electrical Works & Connections | 2025-12-07 → 2025-11-26 A (-11d) | 2025-12-18 → 2025-11-29 A (-19d) | 0% → 100% | 0d → none |  |
| CON-LEG101-MB-1130 | Install Site Facilities | 2025-12-07 → 2025-11-26 A (-11d) | 2025-12-14 → 2025-11-27 A (-17d) | 0% → 100% | 0d → none |  |
| CON-LEG101-MB-1260 | Construct Site Access Roads | 2025-11-26 A | 2025-11-29 A | 0% → 100% | 0d → none |  |
| CON-LEG101-MB-1270 | Clear & Grub for Offices & Access Road | 2025-11-26 A | 2025-11-27 A | 0% → 100% | 0d → none |  |
| CON-LEG101-MB-1250 | Construct Temporary Fence | 2025-11-29 A | 2025-12-06 → 2025-12-04 A (-2d) | 0% → 100% | 0d → none |  |
| CON-LEG101-MB-1110 | Construct Parking Sheds | 2025-12-07 → 2025-12-28 A (+21d) | 2025-12-18 → 2026-01-06 A (+19d) | 0% → 100% | 0d → none |  |
| CON-LEG101-MB-1150 | Install Project Signs | 2025-11-30 → 2025-12-28 A (+28d) | 2025-12-11 → 2025-12-30 A (+19d) | 0% → 100% | 0d → none |  |
| 1 | **Permit's and Authority Approvals** |  | 2025-12-09 → 2025-11-20 (-19d) |  |  |  |
| CON-LEG101-PA-1000 | Excavation & Backfilling Permit Permit | 2025-11-19 A | 2025-12-09 → 2025-11-20 A (-19d) | 0% → 100% | 8d → none |  |
| CON-LEG101-PA-1010 | Saudi Electricity Company Permit | 2025-11-19 A | 2025-12-09 → 2025-11-20 A (-19d) | 0% → 100% | 8d → none |  |
| CON-LEG101-PA-1020 | Utility Clearance (NOC) Permit | 2025-11-19 A | 2025-12-09 → 2025-11-20 A (-19d) | 0% → 100% | 8d → none |  |
| CON-LEG101-PA-1030 | Landscaping & Irrigation Works Permit Permit | 2025-11-19 A | 2025-12-09 → 2025-11-20 A (-19d) | 0% → 100% | 8d → none |  |
| CON-LEG101-PA-1040 | Material Transportation Permit (MOT) | 2025-11-19 A | 2025-12-09 → 2025-11-20 A (-19d) | 0% → 100% | 8d → none |  |
| 3 | **Preliminary Submittals** |  | 2025-12-18 → 2026-03-04 (+76d) |  |  |  |
| 1 | **Preparation and Submittal by Contractor's** |  | 2025-12-11 → 2025-12-28 (+17d) |  |  |  |
| CON-LEG101-PS-1000 | Preparation and Submittal of Detailed Work Order Programme (baseline schedule) | 2025-11-19 A | 2025-12-11 → 2025-12-16 A (+5d) | 0% → 100% | 0d → none |  |
| CON-LEG101-PS-1010 | Preparation and Submittal of Project Execution Plan | 2025-11-30 → 2025-11-25 A (-5d) | 2025-12-11 → 2025-12-27 A (+16d) | 0% → 100% | 0d → none |  |
| CON-LEG101-PS-1020 | Preparation and Submittal of Quality Management Plan | 2025-11-30 → 2025-11-25 A (-5d) | 2025-12-11 → 2025-12-28 A (+17d) | 0% → 100% | 0d → none |  |
| CON-LEG101-PS-1070 | Preparation and Submittal of Organization Chart | 2025-11-30 → 2025-11-25 A (-5d) | 2025-12-11 → 2025-11-25 A (-16d) | 0% → 100% | 0d → none |  |
| CON-LEG101-PS-1030 | Preparation and Submittal of Safety Management Plan | 2025-11-30 → 2025-12-10 A (+10d) | 2025-12-11 → 2025-12-10 A (-1d) | 0% → 100% | 0d → none |  |
| CON-LEG101-PS-1050 | Preparation and Submittal of Project Security Management Plan | 2025-11-30 → 2025-12-10 A (+10d) | 2025-12-11 → 2025-12-10 A (-1d) | 0% → 100% | 0d → none |  |
| CON-LEG101-PS-1040 | Preparation and Submittal of Risk Plan | 2025-11-30 → 2025-12-15 A (+15d) | 2025-12-11 → 2025-12-15 A (+4d) | 0% → 100% | 0d → none |  |
| CON-LEG101-PS-1060 | Preparation and Submittal of Project Waste Management Plan | 2025-11-30 → 2025-12-15 A (+15d) | 2025-12-11 → 2025-12-27 A (+16d) | 0% → 100% | 0d → none |  |
| 2 | **Approval by the Employer's** | 2025-11-30 → 2025-12-17 (+17d) | 2025-12-18 → 2026-03-04 (+76d) |  |  |  |
| CON-LEG101-PS-1090 | Approval of Detailed Work Order Programme (baseline schedule) | 2025-12-13 → 2025-12-17 A (+4d) | 2025-12-18 A | 0% → 100% | 0d → none |  |
| CON-LEG101-PS-1130 | Approval of Risk Plan | 2025-12-13 → 2025-12-18 A (+5d) | 2025-12-18 A | 0% → 100% | 0d → none |  |
| CON-LEG101-PS-1160 | Approval of Organization Chart | 2025-12-13 → 2026-01-08 A (+26d) | 2025-12-18 → 2026-01-08 A (+21d) | 0% → 100% | 0d → none |  |
| CON-LEG101-PS-1170 | Approval of Comminumcation Plan | 2025-11-30 → 2026-01-15 A (+46d) | 2025-12-06 → 2026-01-15 A (+40d) | 0% → 100% | 11d → none |  |
| CON-LEG101-PS-1120 | Approval of Safety Management Plan | 2025-12-13 → 2026-02-03 A (+52d) | 2025-12-18 → 2026-03-04 A (+76d) | 0% → 100% | 0d → none |  |
| CON-LEG101-PS-1140 | Approval of Project Security Management Plan | 2025-12-13 → 2026-02-03 A (+52d) | 2025-12-18 → 2026-02-03 A (+47d) | 0% → 100% | 0d → none |  |
| CON-LEG101-PS-1150 | Approval of Project Waste Management Plan | 2025-12-13 → 2026-02-03 A (+52d) | 2025-12-18 → 2026-02-03 A (+47d) | 0% → 100% | 0d → none |  |
| CON-LEG101-PS-1100 | Approval of Project Execution Plan | 2025-12-13 → 2026-02-05 A (+54d) | 2025-12-18 → 2026-02-05 A (+49d) | 0% → 100% | 0d → none |  |
| CON-LEG101-PS-1110 | Approval of Quality Management Plan | 2025-12-13 → 2026-02-09 A (+58d) | 2025-12-18 → 2026-02-09 A (+53d) | 0% → 100% | 0d → none |  |
| 3 | **Engineering** | 2025-11-26 → 2025-12-01 (+5d) | 2026-01-19 → 2026-10-24 (+278d) |  |  |  |
| 2 | **Shop Drawings** | 2025-11-29 → 2025-12-04 (+5d) | 2026-01-19 → 2026-10-24 (+278d) |  |  |  |
| 1 | **Shop Drawings Submittal** | 2025-11-29 → 2025-12-04 (+5d) | 2026-01-11 → 2026-10-17 (+279d) |  |  |  |
| 6 | **Shop Drawings Submittal for Stormwater Utilities** | 2025-11-29 → 2026-01-01 (+33d) | 2025-12-18 → 2026-01-01 (+14d) |  |  |  |
| CON-LEG101-EN-1510 | Shop DWG Submittal for Stormwater Utilities | 2025-11-29 → 2026-01-01 A (+33d) | 2025-12-08 → 2026-01-01 A (+24d) | 0% → 100% | 0d → none |  |
| CON-LEG101-EN-1520 | Shop DWG Submittal for Stormwater Utilities Profiles | 2025-11-29 → 2026-01-01 A (+33d) | 2025-12-08 → 2026-01-01 A (+24d) | 0% → 100% | 21d → none |  |
| CON-LEG101-EN-1530 | Shop DWG Submittal for Stormwater Utilities Standard Details | 2025-12-09 → 2026-01-01 A (+23d) | 2025-12-18 → 2026-01-01 A (+14d) | 0% → 100% | 21d → none |  |

| ID | Task | Start | Finish | Complete | Total float |
| --- | --- | --- | --- | --- | --- |
| 5 | **Shop Drawings Submittal for Sanitary Sewerage** | 2025-12-09 → 2025-12-16 (+7d) | 2025-12-18 → 2025-12-16 (-2d) |  |  |
| CON-LEG101-EN-1480 | Shop DWG Submittal for Sanitary Sewerage | 2025-12-09 → 2025-12-16 A (+7d) | 2025-12-18 → 2025-12-16 A (-2d) | 0% → 100% | 0d → none |
| CON-LEG101-EN-1490 | Shop DWG Submittal for Sanitary Sewerage Profiles | 2025-12-09 → 2025-12-16 A (+7d) | 2025-12-18 → 2025-12-16 A (-2d) | 0% → 100% | 12d → none |
| CON-LEG101-EN-1500 | Shop DWG Submittal for Sanitary Sewerage Standard Details | 2025-12-09 → 2025-12-16 A (+7d) | 2025-12-18 → 2025-12-16 A (-2d) | 0% → 100% | 12d → none |
| 4 | **Shop Drawings Submittal for TSE Network** | 2025-12-20 → 2026-01-03 (+14d) | 2025-12-24 → 2026-01-04 (+11d) |  |  |
| CON-LEG101-EN-1450 | Shop DWG Submittal for TSE Network | 2025-12-20 → 2026-01-03 A (+14d) | 2025-12-24 → 2026-01-04 A (+11d) | 0% → 100% | 0d → none |
| CON-LEG101-EN-1460 | Shop DWG Submittal for TSE Profiles | 2025-12-20 → 2026-01-03 A (+14d) | 2025-12-24 → 2026-01-04 A (+11d) | 0% → 100% | 7d → none |
| CON-LEG101-EN-1470 | Shop DWG Submittal for TSE Standard Details | 2025-12-20 → 2026-01-03 A (+14d) | 2025-12-24 → 2026-01-04 A (+11d) | 0% → 100% | 7d → none |
| 3 | **Shop Drawings Submittal for Public Water Utility Distribution** | 2025-12-20 → 2026-01-04 (+15d) | 2025-12-24 → 2026-01-04 (+11d) |  |  |
| CON-LEG101-EN-1420 | Shop DWG Submittal for Public Water Utility Distribution | 2025-12-20 → 2026-01-04 A (+15d) | 2025-12-24 → 2026-01-04 A (+11d) | 0% → 100% | 0d → none |
| CON-LEG101-EN-1430 | Shop DWG Submittal for Potable Water Profiles | 2025-12-20 → 2026-01-04 A (+15d) | 2025-12-24 → 2026-01-04 A (+11d) | 0% → 100% | 7d → none |
| CON-LEG101-EN-1440 | Shop DWG Submittal for Potable Water Standard Details | 2025-12-20 → 2026-01-04 A (+15d) | 2025-12-24 → 2026-01-04 A (+11d) | 0% → 100% | 7d → none |
| 2 | **Shop Drawings Submittal for Electrical Network** | 2025-12-25 → 2025-12-17 (-8d) | 2026-01-04 → 2026-10-17 (+286d) |  |  |
| CON-LEG101-EN-1410 | Shop DWG Submittal for Low Voltage Network | 2025-12-25 → 2025-12-17 A (-8d) | 2026-01-04 → 2025-12-17 A (-18d) | 0% → 100% | 7d → none |
| CON-LEG101-EN-1400 | Shop DWG Submittal for Street Lighting | 2025-12-25 → 2025-12-18 A (-7d) | 2026-01-04 → 2025-12-18 A (-17d) | 0% → 100% | 7d → none |
| CON-LEG101-EN-1390 | Shop DWG Submittal for Medium Voltage Network | 2025-12-25 → 2026-10-07 (+286d) | 2026-01-04 → 2026-10-17 (+286d) |  | 7d → -43d |
| 8 | **Shop Drawings Submittal for Telecommunications** | 2025-12-25 → 2025-12-17 (-8d) | 2026-01-04 → 2025-12-17 (-18d) |  |  |
| CON-LEG101-EN-3190 | Shop DWG Submittal for Telecommunications Works | 2025-12-25 → 2025-12-17 A (-8d) | 2026-01-04 → 2025-12-17 A (-18d) | 0% → 100% | 7d → none |
| 9 | **Shop Drawings Submittal for CCTV feeding system and GSM** | 2025-12-25 → 2025-12-17 (-8d) | 2026-01-04 → 2025-12-17 (-18d) |  |  |
| CON-LEG101-EN-3200 | Shop DWG Submittal for CCTV feeding system and GSM | 2025-12-25 → 2025-12-17 A (-8d) | 2026-01-04 → 2025-12-17 A (-18d) | 0% → 100% | 7d → none |
| 10 | **Shop Drawings Submittal for Earthing System** | 2025-12-25 → 2025-12-18 (-7d) | 2026-01-04 → 2025-12-18 (-17d) |  |  |
| CON-LEG101-EN-3210 | Shop DWG Submittal for Earthing System | 2025-12-25 → 2025-12-18 A (-7d) | 2026-01-04 → 2025-12-18 A (-17d) | 0% → 100% | 7d → none |
| 11 | **Shop Drawings Submittal for Road Lighting** | 2025-12-25 → 2025-12-18 (-7d) | 2026-01-11 → 2025-12-18 (-24d) |  |  |
| CON-LEG101-EN-1260 | Shop DWG Submittal for Street Lighting General Arrangement | 2025-12-25 → 2025-12-18 A (-7d) | 2026-01-11 → 2025-12-18 A (-24d) | 0% → 100% | 13d → none |
| CON-LEG101-EN-1270 | Shop DWG Submittal for Street Lighting Network Layout | 2025-12-25 → 2025-12-18 A (-7d) | 2026-01-11 → 2025-12-18 A (-24d) | 0% → 100% | 13d → none |
| CON-LEG101-EN-1280 | Shop DWG Submittal for Street Lighting Details | 2025-12-25 → 2025-12-18 A (-7d) | 2026-01-11 → 2025-12-18 A (-24d) | 0% → 100% | 13d → none |
| CON-LEG101-EN-1290 | Shop DWG Submittal for Street Lighting Single Line Diagram | 2025-12-25 → 2025-12-18 A (-7d) | 2026-01-11 → 2025-12-18 A (-24d) | 0% → 100% | 13d → none |
| 1 | **Shop Drawings Submittal for Road Works** | 2025-12-25 → 2025-12-04 (-21d) | 2026-01-07 → 2025-12-06 (-32d) |  |  |
| CON-LEG101-EN-1300 | Shop DWG Submittal for Topographic Survey | 2025-12-25 → 2025-12-04 A (-21d) | 2025-12-31 → 2025-12-06 A (-25d) | 0% → 100% | 0d → none |
| CON-LEG101-EN-1310 | Shop DWG Submittal for Road Layout Plan | 2026-01-01 → 2025-12-04 A (-28d) | 2026-01-07 → 2025-12-06 A (-32d) | 0% → 100% | 0d → none |
| CON-LEG101-EN-1320 | Shop DWG Submittal for Typical Cross Section | 2026-01-01 → 2025-12-04 A (-28d) | 2026-01-07 → 2025-12-06 A (-32d) | 0% → 100% | 0d → none |
| CON-LEG101-EN-1330 | Shop DWG Submittal for Road Setting Out | 2026-01-01 → 2025-12-04 A (-28d) | 2026-01-07 → 2025-12-06 A (-32d) | 0% → 100% | 0d → none |
| CON-LEG101-EN-1340 | Shop DWG Submittal for Road Profiles | 2026-01-01 → 2025-12-04 A (-28d) | 2026-01-07 → 2025-12-06 A (-32d) | 0% → 100% | 0d → none |
| 14 | **Shop Drawings Submittal for Bridge Works** | 2025-12-20 → 2025-12-31 (+11d) | 2026-01-05 → 2025-12-31 (-5d) |  |  |
| CON-LEG101-EN-1020 | Shop DWG Submittal for Piles Setting out and Reinforcement Details | 2025-12-20 → 2025-12-31 A (+11d) | 2026-01-05 → 2025-12-31 A (-5d) | 0% → 100% | 0d → none |
| CON-LEG101-EN-1030 | Shop DWG Submittal for Abutment Setting out and Reinforcement Details | 2025-12-20 → 2025-12-31 A (+11d) | 2026-01-05 → 2025-12-31 A (-5d) | 0% → 100% | 0d → none |
| CON-LEG101-EN-1040 | Shop DWG Submittal for Pier and Pilecap Setting out and Reinforcement Details | 2025-12-20 → 2025-12-31 A (+11d) | 2026-01-05 → 2025-12-31 A (-5d) | 0% → 100% | 0d → none |
| CON-LEG101-EN-1060 | Shop DWG Submittal for Deck Slab Setting out and Reinforcement Details | 2025-12-20 → 2025-12-31 A (+11d) | 2026-01-05 → 2025-12-31 A (-5d) | 0% → 100% | 0d → none |
| CON-LEG101-EN-1070 | Shop DWG Submittal for Bearing Setting out and Details | 2025-12-20 → 2025-12-31 A (+11d) | 2026-01-05 → 2025-12-31 A (-5d) | 0% → 100% | 0d → none |
| CON-LEG101-EN-1080 | Shop DWG Submittal for Deflection Diagram | 2025-12-20 → 2025-12-31 A (+11d) | 2026-01-05 → 2025-12-31 A (-5d) | 0% → 100% | 0d → none |
| CON-LEG101-EN-1090 | Shop DWG Submittal for Appron Slab Details | 2025-12-20 → 2025-12-31 A (+11d) | 2026-01-05 → 2025-12-31 A (-5d) | 0% → 100% | 0d → none |
| CON-LEG101-EN-1100 | Shop DWG Submittal for Finishing Works Details | 2025-12-20 → 2025-12-31 A (+11d) | 2026-01-05 → 2025-12-31 A (-5d) | 0% → 100% | 0d → none |
| 12 | **Shop Drawings Submittal for Irrigation Works** | 2025-12-20 → 2026-01-10 (+21d) | 2025-12-29 → 2026-01-10 (+12d) |  |  |
| CON-LEG101-EN-3220 | Shop DWG Submittal for Secondary Irrigation Pipe Works | 2025-12-20 → 2026-01-10 A (+21d) | 2025-12-29 → 2026-01-10 A (+12d) | 0% → 100% | 9d → none |
| CON-LEG101-EN-3230 | Shop DWG Submittal for Secondary Irrigation Valves and Controller Works | 2025-12-20 → 2026-01-10 A (+21d) | 2025-12-29 → 2026-01-10 A (+12d) | 0% → 100% | 12d → none |
| 13 | **Shop Drawings Submittal for Landscape Works** | 2025-12-20 → 2026-01-10 (+21d) | 2025-12-29 → 2026-01-10 (+12d) |  |  |
| CON-LEG101-EN-3240 | Shop DWG Submittal for Preparation Works | 2025-12-20 → 2026-01-10 A (+21d) | 2025-12-29 → 2026-01-10 A (+12d) | 0% → 100% | 9d → none |
| CON-LEG101-EN-3250 | Shop DWG Submittal for Placing Agricutural Soil works | 2025-12-20 → 2026-01-10 A (+21d) | 2025-12-29 → 2026-01-10 A (+12d) | 0% → 100% | 9d → none |
| CON-LEG101-EN-3260 | Shop DWG Submittal for Planting Works | 2025-12-20 → 2026-01-10 A (+21d) | 2025-12-29 → 2026-01-10 A (+12d) | 0% → 100% | 9d → none |
| CON-LEG101-EN-3270 | Shop DWG Submittal for Curb Setting Out Points | 2025-12-20 → 2026-01-10 A (+21d) | 2025-12-29 → 2026-01-10 A (+12d) | 0% → 100% | 9d → none |
| 7 | **Shop Drawings Submittal for Fence & Gates** | 2025-12-20 → 2025-12-06 (-14d) | 2025-12-29 → 2025-12-16 (-13d) |  |  |
| CON-LEG101-EN-1540 | Shop DWG Submittal for the Fence & Gates - Civil Works | 2025-12-20 → 2025-12-06 A (-14d) | 2025-12-29 → 2025-12-16 A (-13d) | 0% → 100% | 9d → none |
| CON-LEG101-EN-1550 | Shop DWG Submittal for the Fence & Gates - Mechanical Works | 2025-12-20 → 2025-12-06 A (-14d) | 2025-12-29 → 2025-12-16 A (-13d) | 0% → 100% | 9d → none |
| CON-LEG101-EN-1560 | Shop DWG Submittal for the Fence & Gates - Finishing Works | 2025-12-20 → 2025-12-06 A (-14d) | 2025-12-29 → 2025-12-16 A (-13d) | 0% → 100% | 9d → none |
| 2 | **Shop Drawings Approval** | 2025-12-09 → 2025-12-08 (-1d) | 2026-01-19 → 2026-10-24 (+278d) |  |  |
| 6 | **Shop Drawings Approval for Storm Network** | 2025-12-09 → 2026-01-07 (+29d) | 2025-12-29 → 2026-02-03 (+36d) |  |  |
| CON-LEG101-EN-1780 | Shop DWG Approval for Stormwater Utilities | 2025-12-09 → 2026-01-07 A (+29d) | 2025-12-15 → 2026-02-03 A (+50d) | 0% → 100% | 18d → none |
| CON-LEG101-EN-1790 | Shop DWG Approval for Stormwater UtilitiesProfiles | 2025-12-16 → 2026-01-07 A (+22d) | 2025-12-22 → 2026-02-03 A (+43d) | 0% → 100% | 18d → none |
| CON-LEG101-EN-1800 | Shop DWG Approval for Stormwater UtilitiesStandard Details | 2025-12-23 → 2026-01-07 A (+15d) | 2025-12-29 → 2026-02-03 A (+36d) | 0% → 100% | 18d → none |
| 5 | **Shop Drawings Approval for Sanitary Sewerage** | 2025-12-20 → 2025-12-17 (-3d) | 2025-12-25 → 2026-01-14 (+20d) |  |  |
| CON-LEG101-EN-1750 | Shop DWG Approval for Sanitary Sewerage | 2025-12-20 → 2025-12-17 A (-3d) | 2025-12-25 → 2026-01-14 A (+20d) | 0% → 100% | 21d → none |
| CON-LEG101-EN-1760 | Shop DWG Approval for Sanitary Sewerage Profiles | 2025-12-20 → 2025-12-17 A (-3d) | 2025-12-25 → 2026-01-14 A (+20d) | 0% → 100% | 21d → none |
| CON-LEG101-EN-1770 | Shop DWG Approval for Sanitary Sewerage Standard Details | 2025-12-20 → 2025-12-17 A (-3d) | 2025-12-25 → 2026-01-14 A (+20d) | 0% → 100% | 12d → none |
| 4 | **Shop Drawings Approval for TSE Network** | 2025-12-25 → 2026-01-08 (+14d) | 2025-12-31 → 2026-01-20 (+20d) |  |  |
| CON-LEG101-EN-1720 | Shop DWG Approval for TSE Network | 2025-12-25 → 2026-01-08 A (+14d) | 2025-12-31 → 2026-01-20 A (+20d) | 0% → 100% | 7d → none |
| CON-LEG101-EN-1730 | Shop DWG Approval for TSE Profiles | 2025-12-25 → 2026-01-08 A (+14d) | 2025-12-31 → 2026-01-20 A (+20d) | 0% → 100% | 16d → none |
| CON-LEG101-EN-1740 | Shop DWG Approval for TSE Standard Details | 2025-12-25 → 2026-01-08 A (+14d) | 2025-12-31 → 2026-01-20 A (+20d) | 0% → 100% | 7d → none |
| 3 | **Shop Drawings Approval for Public Water Utility Distribution** | 2025-12-25 → 2026-01-10 (+16d) | 2025-12-31 → 2026-01-15 (+15d) |  |  |
| CON-LEG101-EN-1690 | Shop DWG Approval for Public Water Utility Distribution | 2025-12-25 → 2026-01-10 A (+16d) | 2025-12-31 → 2026-01-15 A (+15d) | 0% → 100% | 7d → none |
| CON-LEG101-EN-1700 | Shop DWG Approval for Potable Water Profiles | 2025-12-25 → 2026-01-10 A (+16d) | 2025-12-31 → 2026-01-15 A (+15d) | 0% → 100% | 16d → none |

| ID | Task | Start | Finish | Complete | Total float |
| --- | --- | --- | --- | --- | --- |
| CON-LEG101-EN-1710 | Shop DWG Approval for Potable Water Standard Details | 2025-12-25 → 2026-01-10 A (+16d) | 2025-12-31 → 2026-01-15 A (+15d) | 0% → 100% | 7d → none |
| 2 | **Shop Drawings Approval for Electrical Network** | 2026-01-05 → 2025-12-23 (-13d) | 2026-01-11 → 2026-10-24 (+286d) |  |  |
| CON-LEG101-EN-1670 | Shop DWG Approval for Street Lighting | 2026-01-05 → 2025-12-23 A (-13d) | 2026-01-11 → 2026-02-28 A (+48d) | 0% → 100% | 7d → none |
| CON-LEG101-EN-1680 | Shop DWG Approval for Low Voltage Network | 2026-01-05 → 2025-12-23 A (-13d) | 2026-01-11 → 2025-12-23 A (-19d) | 0% → 100% | 7d → none |
| CON-LEG101-EN-1660 | Shop DWG Approval for Medium Voltage Network | 2026-01-05 → 2026-10-18 (+286d) | 2026-01-11 → 2026-10-24 (+286d) |  | 7d → -43d |
| 8 | **Shop Drawings Approval for Telecommunications** | 2026-01-05 → 2025-12-27 (-9d) | 2026-01-11 → 2026-04-05 (+84d) |  |  |
| CON-LEG101-EN-3280 | Shop DWG Approval for Telecommunications Works | 2026-01-05 → 2025-12-27 A (-9d) | 2026-01-11 → 2026-04-05 A (+84d) | 0% → 100% | 7d → none |
| 9 | **Shop Drawings Approval for CCTV feeding system and GSM** | 2026-01-05 → 2026-02-14 (+40d) | 2026-01-11 → 2026-02-14 (+34d) |  |  |
| CON-LEG101-EN-3290 | Shop DWG Approval for CCTV feeding system and GSM | 2026-01-05 → 2026-02-14 A (+40d) | 2026-01-11 → 2026-02-14 A (+34d) | 0% → 100% | 7d → none |
| 10 | **Shop Drawings Approval for Earthing System** | 2026-01-05 → 2025-12-23 (-13d) | 2026-01-11 → 2025-12-23 (-19d) |  |  |
| CON-LEG101-EN-3300 | Shop DWG Approval for Earthing System | 2026-01-05 → 2025-12-23 A (-13d) | 2026-01-11 → 2025-12-23 A (-19d) | 0% → 100% | 7d → none |
| 11 | **Shop Drawings Approval for Road Lighting** | 2025-12-29 → 2025-12-23 (-6d) | 2026-01-04 → 2026-02-28 (+55d) |  |  |
| CON-LEG101-EN-3310 | Shop DWG Approval for Street Lighting General Arrangement | 2025-12-29 → 2025-12-23 A (-6d) | 2026-01-04 → 2026-02-28 A (+55d) | 0% → 100% | 13d → none |
| CON-LEG101-EN-3320 | Shop DWG Approval for Street Lighting Network Layout | 2025-12-29 → 2025-12-23 A (-6d) | 2026-01-04 → 2026-02-28 A (+55d) | 0% → 100% | 13d → none |
| CON-LEG101-EN-3330 | Shop DWG Approval for Street Lighting Details | 2025-12-29 → 2025-12-23 A (-6d) | 2026-01-04 → 2026-02-28 A (+55d) | 0% → 100% | 13d → none |
| CON-LEG101-EN-3360 | Shop DWG Approval for Street Lighting Single Line Diagram | 2025-12-29 → 2025-12-23 A (-6d) | 2026-01-04 → 2026-02-28 A (+55d) | 0% → 100% | 13d → none |
| 1 | **Shop Drawings Approval for Road Works** | 2026-01-01 → 2025-12-08 (-24d) | 2026-01-19 → 2026-01-11 (-8d) |  |  |
| CON-LEG101-EN-1570 | Shop DWG Approval for Topographic Survey | 2026-01-01 → 2025-12-08 A (-24d) | 2026-01-18 → 2026-01-11 A (-7d) | 0% → 100% | 1d → none |
| CON-LEG101-EN-1580 | Shop DWG Approval for Road Layout Plan | 2026-01-08 → 2025-12-08 A (-31d) | 2026-01-19 → 2026-01-11 A (-8d) | 0% → 100% | 0d → none |
| CON-LEG101-EN-1590 | Shop DWG Approval for Typical Cross Section | 2026-01-08 → 2025-12-08 A (-31d) | 2026-01-19 → 2026-01-11 A (-8d) | 0% → 100% | 0d → none |
| CON-LEG101-EN-1600 | Shop DWG Approval for Road Setting Out | 2026-01-08 → 2025-12-08 A (-31d) | 2026-01-19 → 2026-01-11 A (-8d) | 0% → 100% | 0d → none |
| CON-LEG101-EN-1610 | Shop DWG Approval for Road Profiles | 2026-01-08 → 2025-12-08 A (-31d) | 2026-01-19 → 2026-01-11 A (-8d) | 0% → 100% | 0d → none |
| 12 | **Shop Drawings Approval for Bridge Works** | 2026-01-06 → 2026-01-11 (+5d) | 2026-01-19 → 2026-01-20 (+1d) |  |  |
| CON-LEG101-EN-1150 | Shop DWG Approval for Piles Setting out and Reinforcement Details | 2026-01-06 → 2026-01-11 A (+5d) | 2026-01-19 → 2026-01-11 A (-8d) | 0% → 100% | 0d → none |
| CON-LEG101-EN-1160 | Shop DWG Approval for Abutment Setting out and Reinforcement Details | 2026-01-06 → 2026-01-11 A (+5d) | 2026-01-19 → 2026-01-11 A (-8d) | 0% → 100% | 0d → none |
| CON-LEG101-EN-1170 | Shop DWG Approval for Pier and Pilecap Setting out and Reinforcement Details | 2026-01-06 → 2026-01-11 A (+5d) | 2026-01-19 → 2026-01-11 A (-8d) | 0% → 100% | 0d → none |
| CON-LEG101-EN-1190 | Shop DWG Approval for Deck Slab Setting out and Reinforcement Details | 2026-01-06 → 2026-01-11 A (+5d) | 2026-01-19 → 2026-01-11 A (-8d) | 0% → 100% | 0d → none |
| CON-LEG101-EN-1200 | Shop DWG Approval for Bearing Setting out and Details | 2026-01-06 → 2026-01-11 A (+5d) | 2026-01-19 → 2026-01-11 A (-8d) | 0% → 100% | 0d → none |
| CON-LEG101-EN-1210 | Shop DWG Approval for Deflection Diagram | 2026-01-06 → 2026-01-20 A (+14d) | 2026-01-19 → 2026-01-20 A (+1d) | 0% → 100% | 0d → none |
| CON-LEG101-EN-1220 | Shop DWG Approval for Appron Slab Details | 2026-01-06 → 2026-01-20 A (+14d) | 2026-01-19 → 2026-01-20 A (+1d) | 0% → 100% | 0d → none |
| CON-LEG101-EN-1230 | Shop DWG Approval for Finishing Works Details | 2026-01-06 → 2026-01-20 A (+14d) | 2026-01-19 → 2026-01-20 A (+1d) | 0% → 100% | 0d → none |
| 13 | **Shop Drawings Approval for Irrigation Works** | 2025-12-30 → 2026-01-15 (+16d) | 2026-01-05 → 2026-01-15 (+10d) |  |  |
| CON-LEG101-EN-3340 | Shop DWG Approval for Secondary Irrigation Pipe Works | 2025-12-30 → 2026-01-15 A (+16d) | 2026-01-05 → 2026-01-15 A (+10d) | 0% → 100% | 12d → none |
| CON-LEG101-EN-3350 | Shop DWG Approval for Secondary Irrigation Valves and Controller Works | 2025-12-30 → 2026-01-15 A (+16d) | 2026-01-05 → 2026-01-15 A (+10d) | 0% → 100% | 12d → none |
| 14 | **Shop Drawings Approval for Landscape Works** | 2025-12-30 → 2026-01-14 (+15d) | 2026-01-08 → 2026-03-08 (+59d) |  |  |
| CON-LEG101-EN-3370 | Shop DWG Approval for Preparation Works | 2025-12-30 → 2026-01-14 A (+15d) | 2026-01-08 → 2026-03-08 A (+59d) | 0% → 100% | 9d → none |
| CON-LEG101-EN-3380 | Shop DWG Approval for Placing Agricutural Soil works | 2025-12-30 → 2026-01-14 A (+15d) | 2026-01-08 → 2026-03-08 A (+59d) | 0% → 100% | 9d → none |
| CON-LEG101-EN-3390 | Shop DWG Approval for Planting Works | 2025-12-30 → 2026-01-14 A (+15d) | 2026-01-08 → 2026-03-08 A (+59d) | 0% → 100% | 9d → none |
| CON-LEG101-EN-3400 | Shop DWG Approval for Curb Setting Out Points | 2025-12-30 → 2026-01-14 A (+15d) | 2026-01-08 → 2026-03-08 A (+59d) | 0% → 100% | 9d → none |
| 7 | **Shop Drawings Approval forFence & Gates** | 2025-12-30 → 2025-12-17 (-13d) | 2026-01-08 → 2026-01-26 (+18d) |  |  |
| CON-LEG101-EN-3410 | Shop DWG Approval for the Fence & Gates - Civil Works | 2025-12-30 → 2025-12-17 A (-13d) | 2026-01-08 → 2026-01-26 A (+18d) | 0% → 100% | 9d → none |
| CON-LEG101-EN-3420 | Shop DWG Approval for the Fence & Gates - Mechanical Works | 2025-12-30 → 2025-12-17 A (-13d) | 2026-01-08 → 2026-01-26 A (+18d) | 0% → 100% | 9d → none |
| CON-LEG101-EN-3430 | Shop DWG Approval for the Fence & Gates - Finishing Works | 2025-12-30 → 2025-12-17 A (-13d) | 2026-01-08 → 2026-01-26 A (+18d) | 0% → 100% | 9d → none |
| 3 | **Method Statements** | 2025-11-26 → 2025-12-10 (+14d) | 2026-01-19 → 2026-02-08 (+20d) |  |  |
| 1 | **Method Statements Submittal** | 2025-11-26 → 2025-12-10 (+14d) | 2026-01-12 → 2026-02-07 (+26d) |  |  |
| CON-LEG101-EN-1810 | Preparation & Submission of Method Statement for Earth Works | 2025-11-26 → 2025-12-10 A (+14d) | 2025-12-11 → 2025-12-10 A (-1d) | 0% → 100% | 0d → none |
| CON-LEG101-EN-1820 | Preparation & Submission of Method Statement for Concrete Works | 2025-11-30 → 2025-12-20 A (+20d) | 2025-12-15 → 2025-12-20 A (+5d) | 0% → 100% | 0d → none |
| CON-LEG101-EN-1960 | Preparation & Submission of Method Statement for Fence and Gates | 2025-12-16 → 2025-12-20 A (+4d) | 2025-12-31 → 2026-01-19 A (+19d) | 0% → 100% | 10d → none |
| CON-LEG101-EN-1830 | Preparation & Submission of Method Statement for Waterproofing Works | 2025-12-03 → 2025-12-23 A (+20d) | 2025-12-18 → 2025-12-23 A (+5d) | 0% → 100% | 0d → none |
| CON-LEG101-EN-1840 | Preparation & Submission of Method Statement for Asphalt | 2025-12-20 → 2025-12-23 A (+3d) | 2026-01-04 → 2025-12-23 A (-12d) | 0% → 100% | 0d → none |
| CON-LEG101-EN-1860 | Preparation & Submission of Method Statement for Storm Network | 2025-11-30 → 2025-12-27 A (+27d) | 2025-12-15 → 2025-12-27 A (+12d) | 0% → 100% | 6d → none |
| CON-LEG101-EN-1870 | Preparation & Submission of Method Statement for Sewer Network | 2025-11-30 → 2025-12-28 A (+28d) | 2025-12-15 → 2025-12-28 A (+13d) | 0% → 100% | 6d → none |
| CON-LEG101-EN-1880 | Preparation & Submission of Method Statement for Potable Water Network | 2025-12-03 → 2025-12-28 A (+25d) | 2025-12-18 → 2025-12-28 A (+10d) | 0% → 100% | 9d → none |
| CON-LEG101-EN-1950 | Preparation & Submission of Method Statement for Bridge Slabs | 2025-12-15 → 2025-12-29 A (+14d) | 2025-12-30 → 2025-12-29 A (-1d) | 0% → 100% | 11d → none |
| CON-LEG101-EN-1940 | Preparation & Submission of Method Statement for Girders & Post Tension | 2025-12-11 → 2025-12-30 A (+19d) | 2025-12-27 → 2025-12-30 A (+3d) | 0% → 100% | 11d → none |
| CON-LEG101-EN-1930 | Preparation & Submission of Method Statement for Piles of Bridge | 2025-12-08 → 2026-01-03 A (+26d) | 2025-12-23 → 2026-01-03 A (+11d) | 0% → 100% | 11d → none |
| CON-LEG101-EN-1850 | Preparation & Submission of Method Statement for Paving | 2025-12-28 → 2026-01-04 A (+7d) | 2026-01-12 → 2026-01-04 A (-8d) | 0% → 100% | 0d → none |
| CON-LEG101-EN-1900 | Preparation & Submission of Method Statement for Electrical System | 2025-12-10 → 2026-01-08 A (+29d) | 2025-12-25 → 2026-01-25 A (+31d) | 0% → 100% | 12d → none |
| CON-LEG101-EN-1890 | Preparation & Submission of Method Statement for TSE Network | 2025-12-07 → 2026-01-14 A (+38d) | 2025-12-22 → 2026-01-14 A (+23d) | 0% → 100% | 12d → none |
| CON-LEG101-EN-1920 | Preparation & Submission of Method Statement for Telecome System | 2025-12-14 → 2026-01-15 A (+32d) | 2025-12-29 → 2026-01-15 A (+17d) | 0% → 100% | 12d → none |
| CON-LEG101-EN-1910 | Preparation & Submission of Method Statement for Low Current System & CCTV | 2025-12-14 → 2026-02-07 A (+55d) | 2025-12-29 → 2026-02-07 A (+40d) | 0% → 100% | 12d → none |
| 2 | **Method Statements Approval** | 2025-12-13 → 2025-12-20 (+7d) | 2026-01-19 → 2026-02-08 (+20d) |  |  |
| CON-LEG101-EN-3440 | Approval of Method Statement for Earth Works | 2025-12-13 → 2025-12-20 A (+7d) | 2025-12-18 → 2025-12-20 A (+2d) | 0% → 100% | 9d → none |
| CON-LEG101-EN-3460 | Approval of Method Statement for Waterproofing Works | 2025-12-30 → 2025-12-27 A (-3d) | 2026-01-05 → 2025-12-27 A (-9d) | 0% → 100% | 6d → none |
| CON-LEG101-EN-3450 | Approval of Method Statement for Concrete Works | 2025-12-20 → 2025-12-28 A (+8d) | 2025-12-25 → 2026-01-04 A (+10d) | 0% → 100% | 9d → none |
| CON-LEG101-EN-3490 | Approval of Method Statement for Storm Network | 2026-01-06 → 2026-01-04 A (-2d) | 2026-01-12 → 2026-01-11 A (-1d) | 0% → 100% | 6d → none |
| CON-LEG101-EN-3560 | Approval of Method Statement for Piles of Bridge | 2025-12-24 → 2026-01-04 A (+11d) | 2025-12-30 → 2026-01-04 A (+5d) | 0% → 100% | 17d → none |
| CON-LEG101-EN-3570 | Approval of Method Statement for Girders & Post Tension | 2025-12-28 → 2026-01-04 A (+7d) | 2026-01-03 → 2026-01-04 A (+1d) | 0% → 100% | 14d → none |
| CON-LEG101-EN-3580 | Approval of Method Statement for Bridge Slabs | 2025-12-31 → 2026-01-04 A (+4d) | 2026-01-06 → 2026-01-04 A (-2d) | 0% → 100% | 11d → none |
| CON-LEG101-EN-3470 | Approval of Method Statement for Asphalt | 2026-01-05 → 2026-01-11 A (+6d) | 2026-01-11 A | 0% → 100% | 7d → none |

| ID | Task | Start | Finish | Complete | Total float |
| --- | --- | --- | --- | --- | --- |
| CON-LEG101-EN-3530 | Approval of Method Statement for Electrical System | 2025-12-27 → 2026-01-11 A (+15d) | 2026-01-01 → 2026-01-11 A (+10d) | 0% → 100% | 15d → none |
| CON-LEG101-EN-3480 | Approval of Method Statement for Paving | 2026-01-13 A | 2026-01-19 → 2026-01-13 A (-6d) | 0% → 100% | 0d → none |
| CON-LEG101-EN-3500 | Approval of Method Statement for Sewer Network | 2025-12-16 → 2026-01-14 A (+29d) | 2025-12-22 → 2026-01-17 A (+26d) | 0% → 100% | 6d → none |
| CON-LEG101-EN-3520 | Approval of Method Statement for TSE Network | 2026-01-06 → 2026-01-17 A (+11d) | 2026-01-12 → 2026-01-17 A (+5d) | 0% → 100% | 6d → none |
| CON-LEG101-EN-3550 | Approval of Method Statement for Telecome System | 2025-12-30 → 2026-01-17 A (+18d) | 2026-01-05 → 2026-01-17 A (+12d) | 0% → 100% | 12d → none |
| CON-LEG101-EN-3510 | Approval of Method Statement for Potable Water Network | 2025-12-23 → 2026-01-27 A (+35d) | 2025-12-29 → 2026-01-27 A (+29d) | 0% → 100% | 6d → none |
| CON-LEG101-EN-3590 | Approval of Method Statement for Fence and Gates | 2026-01-01 → 2026-02-05 A (+35d) | 2026-01-07 → 2026-02-05 A (+29d) | 0% → 100% | 10d → none |
| CON-LEG101-EN-3540 | Approval of Method Statement for Low Current System & CCTV | 2025-12-30 → 2026-02-08 A (+40d) | 2026-01-05 → 2026-02-08 A (+34d) | 0% → 100% | 12d → none |
| 4 | **Pre-qualification and Material** | 2025-12-15 → 2025-12-01 (-14d) | 2026-01-19 → 2026-10-12 (+266d) |  |  |
| 1 | **Road Works - Civil** | 2025-12-15 → 2025-12-01 (-14d) | 2026-01-11 → 2026-01-24 (+13d) |  |  |
| 1 | **Steel Reinforcement** | 2025-12-15 → 2025-12-08 (-7d) | 2025-12-27 → 2025-12-14 (-13d) |  |  |
| CON-LEG101-SB-4260 | Pre-qualification and Material Submittal for Steel Reinforcement | 2025-12-15 → 2025-12-08 A (-7d) | 2025-12-20 → 2025-12-08 A (-12d) | 0% → 100% | 0d → none |
| CON-LEG101-SB-4270 | Pre-qualification and Material Approval for Steel Reinforcement | 2025-12-21 → 2025-12-09 A (-12d) | 2025-12-27 → 2025-12-14 A (-13d) | 0% → 100% | 0d → none |
| 2 | **Ready Mixed Concrete** | 2025-12-21 → 2025-12-01 (-20d) | 2025-12-30 → 2026-01-01 (+2d) |  |  |
| CON-LEG101-SB-4280 | Pre-qualification and Material Submittal for Ready Mixed Concrete | 2025-12-21 → 2025-12-01 A (-20d) | 2025-12-23 → 2025-12-16 A (-7d) | 0% → 100% | 7d → none |
| CON-LEG101-SB-4290 | Pre-qualification and Material Approval for Ready Mixed Concrete | 2025-12-24 → 2026-01-01 A (+8d) | 2025-12-30 → 2026-01-01 A (+2d) | 0% → 100% | 16d → none |
| 3 | **Water Proofing** | 2025-12-24 → 2025-12-16 (-8d) | 2026-01-05 → 2026-01-24 (+19d) |  |  |
| CON-LEG101-SB-4300 | Pre-qualification and Material Submittal for Water Proofing | 2025-12-24 → 2025-12-16 A (-8d) | 2025-12-29 → 2026-01-06 A (+8d) | 0% → 100% | 7d → none |
| CON-LEG101-SB-4310 | Pre-qualification and Material Approval for Water Proofing | 2025-12-30 → 2025-12-21 A (-9d) | 2026-01-05 → 2026-01-24 A (+19d) | 0% → 100% | 12d → none |
| 4 | **Aggregate Base Course** | 2025-12-24 → 2025-12-01 (-23d) | 2026-01-05 → 2026-01-13 (+8d) |  |  |
| CON-LEG101-SB-1020 | Pre-qualification and Material Submittal for Aggregate Base Cource | 2025-12-24 → 2025-12-01 A (-23d) | 2025-12-29 → 2026-01-13 A (+15d) | 0% → 100% | 7d → none |
| CON-LEG101-SB-1030 | Pre-qualification and Material Approval for Aggregate Base Cource | 2025-12-30 → 2025-12-02 A (-28d) | 2026-01-05 → 2026-01-13 A (+8d) | 0% → 100% | 12d → none |
| 5 | **Bituminous Base & Wearing Course** | 2025-12-30 → 2025-12-01 (-29d) | 2026-01-11 → 2026-01-13 (+2d) |  |  |
| CON-LEG101-SB-1060 | Pre-qualification and Material Submittal for Bituminous Base & Wearing Cource | 2025-12-30 → 2025-12-01 A (-29d) | 2026-01-04 → 2026-01-13 A (+9d) | 0% → 100% | 7d → none |
| CON-LEG101-SB-1070 | Pre-qualification and Material Approval for Bituminous Base & Wearing Cource | 2026-01-05 → 2025-12-02 A (-34d) | 2026-01-11 → 2026-01-13 A (+2d) | 0% → 100% | 7d → none |
| 7 | **Precast Concrete Kerb** | 2025-12-30 → 2025-12-16 (-14d) | 2026-01-11 → 2026-01-24 (+13d) |  |  |
| CON-LEG101-SB-1100 | Pre-qualification and Material Submittal for Precast Concrete Kerb | 2025-12-30 → 2025-12-16 A (-14d) | 2026-01-04 → 2026-01-17 A (+13d) | 0% → 100% | 7d → none |
| CON-LEG101-SB-1110 | Pre-qualification and Material Approval for Precast Concrete Kerb | 2026-01-05 → 2025-12-18 A (-18d) | 2026-01-11 → 2026-01-24 A (+13d) | 0% → 100% | 7d → none |
| 8 | **Interlocking Block Pavers** | 2025-12-30 → 2025-12-16 (-14d) | 2026-01-11 → 2026-01-24 (+13d) |  |  |
| CON-LEG101-SB-1140 | Pre-qualification and Material Submittal for Interlocking Block Pavers | 2025-12-30 → 2025-12-16 A (-14d) | 2026-01-04 → 2026-01-17 A (+13d) | 0% → 100% | 7d → none |
| CON-LEG101-SB-1150 | Pre-qualification and Material Approval for Interlocking Block Pavers | 2026-01-05 → 2025-12-18 A (-18d) | 2026-01-11 → 2026-01-24 A (+13d) | 0% → 100% | 7d → none |
| 9 | **Pavement Markings** | 2025-12-30 → 2026-01-07 (+8d) | 2026-01-11 → 2026-01-18 (+7d) |  |  |
| CON-LEG101-SB-1180 | Pre-qualification and Material Submittal for Pavement Markings | 2025-12-30 → 2026-01-07 A (+8d) | 2026-01-04 → 2026-01-18 A (+14d) | 0% → 100% | 7d → none |
| CON-LEG101-SB-1190 | Pre-qualification and Material Approval for Pavement Markings | 2026-01-05 → 2026-01-13 A (+8d) | 2026-01-11 → 2026-01-18 A (+7d) | 0% → 100% | 7d → none |
| 11 | **Handicap ramp** | 2025-12-30 → 2026-01-07 (+8d) | 2026-01-11 → 2026-01-18 (+7d) |  |  |
| CON-LEG101-SB-2130 | Pre-qualification and Material Submittal for Handicap ramp | 2025-12-30 → 2026-01-07 A (+8d) | 2026-01-04 → 2026-01-17 A (+13d) | 0% → 100% | 7d → none |
| CON-LEG101-SB-2370 | Pre-qualification and Material Approval for Handicap ramp | 2026-01-05 → 2026-01-18 A (+13d) | 2026-01-11 → 2026-01-18 A (+7d) | 0% → 100% | 7d → none |
| 10 | **Traffic Signs** | 2025-12-30 → 2026-01-14 (+15d) | 2026-01-11 → 2026-01-24 (+13d) |  |  |
| CON-LEG101-SB-1220 | Pre-qualification and Material Submittal for Traffic Signs | 2025-12-30 → 2026-01-14 A (+15d) | 2026-01-04 → 2026-01-21 A (+17d) | 0% → 100% | 7d → none |
| CON-LEG101-SB-1230 | Pre-qualification and Material Approval for Traffic Signs | 2026-01-05 → 2026-01-24 A (+19d) | 2026-01-11 → 2026-01-24 A (+13d) | 0% → 100% | 7d → none |
| 7 | **Stormwater Utilities** | 2025-12-16 → 2025-12-11 (-5d) | 2026-01-12 → 2026-01-28 (+16d) |  |  |
| 2 | **GRP Pipes** | 2025-12-16 → 2025-12-11 (-5d) | 2025-12-30 → 2025-12-21 (-9d) |  |  |
| CON-LEG101-SB-1580 | Pre-qualification and Material Submittal for GRP Pipe | 2025-12-16 → 2025-12-11 A (-5d) | 2025-12-23 → 2025-12-11 A (-12d) | 0% → 100% | 0d → none |
| CON-LEG101-SB-1590 | Pre-qualification and Material Approval for GRP Pipe | 2025-12-24 → 2025-12-11 A (-13d) | 2025-12-30 → 2025-12-21 A (-9d) | 0% → 100% | 10d → none |
| 4 | **Inlet Manholes** | 2025-12-24 → 2025-12-11 (-13d) | 2026-01-04 → 2025-12-22 (-13d) |  |  |
| CON-LEG101-SB-3320 | Pre-qualification and Material Submittal for Inlet Manholes | 2025-12-24 → 2025-12-11 A (-13d) | 2025-12-28 → 2025-12-21 A (-7d) | 0% → 100% | 6d → none |
| CON-LEG101-SB-3330 | Pre-qualification and Material Approval for Inlet Manholes | 2025-12-29 → 2025-12-11 A (-18d) | 2026-01-04 → 2025-12-22 A (-13d) | 0% → 100% | 13d → none |
| 1 | **UPVC Pipes** | 2025-12-16 → 2025-12-11 (-5d) | 2025-12-29 → 2026-01-28 (+30d) |  |  |
| CON-LEG101-SB-1540 | Pre-qualification and Material Submittal for UPVC Pipes | 2025-12-16 → 2025-12-11 A (-5d) | 2025-12-22 → 2026-01-11 A (+20d) | 0% → 100% | 10d → none |
| CON-LEG101-SB-1550 | Pre-qualification and Material Approval for UPVC Pipes | 2025-12-23 → 2025-12-11 A (-12d) | 2025-12-29 → 2026-01-28 A (+30d) | 0% → 100% | 10d → none |
| 6 | **Concrete chambers** | 2025-12-29 → 2025-12-11 (-18d) | 2026-01-12 → 2025-12-22 (-21d) |  |  |
| CON-LEG101-SB-1620 | Pre-qualification and Material Submittal for Concrete chambers | 2025-12-29 → 2025-12-11 A (-18d) | 2026-01-05 → 2025-12-21 A (-15d) | 0% → 100% | 6d → none |
| CON-LEG101-SB-1630 | Pre-qualification and Material Approval for Concrete chambers | 2026-01-06 → 2025-12-11 A (-26d) | 2026-01-12 → 2025-12-22 A (-21d) | 0% → 100% | 6d → none |
| 6 | **Sanitary Sewerage** | 2025-12-16 → 2025-12-11 (-5d) | 2026-01-07 → 2025-12-28 (-10d) |  |  |
| 1 | **GRP Pipes** | 2025-12-16 → 2025-12-11 (-5d) | 2025-12-30 → 2025-12-21 (-9d) |  |  |
| CON-LEG101-SB-1460 | Pre-qualification and Material Submittal for GRP Pipe | 2025-12-16 → 2025-12-11 A (-5d) | 2025-12-23 → 2025-12-13 A (-10d) | 0% → 100% | 0d → none |
| CON-LEG101-SB-1470 | Pre-qualification and Material Approval for GRP Pipe | 2025-12-24 → 2025-12-11 A (-13d) | 2025-12-30 → 2025-12-21 A (-9d) | 0% → 100% | 0d → none |
| 2 | **Fiberglass Manholes** | 2025-12-24 → 2025-12-11 (-13d) | 2026-01-07 → 2025-12-28 (-10d) |  |  |
| CON-LEG101-SB-1500 | Pre-qualification and Material Submittal for Fiberglass Manholes | 2025-12-24 → 2025-12-11 A (-13d) | 2025-12-31 → 2025-12-27 A (-4d) | 0% → 100% | 8d → none |
| CON-LEG101-SB-1510 | Pre-qualification and Material Approval for Fiberglass Manholes | 2026-01-01 → 2025-12-11 A (-21d) | 2026-01-07 → 2025-12-28 A (-10d) | 0% → 100% | 8d → none |
| 13 | **TSE Network** | 2025-12-24 → 2025-12-13 (-11d) | 2026-01-12 → 2026-01-01 (-11d) |  |  |
| 1 | **HDPE Pipe (PN 16)** | 2025-12-24 → 2025-12-13 (-11d) | 2026-01-05 → 2025-12-22 (-14d) |  |  |
| CON-LEG101-SB-1420 | Pre-qualification and Material Submittal for HDPE Pipe (PN 16) | 2025-12-24 → 2025-12-13 A (-11d) | 2025-12-29 → 2025-12-22 A (-7d) | 0% → 100% | 3d → none |
| CON-LEG101-SB-1430 | Pre-qualification and Material Approval for HDPE Pipe (PN 16) | 2025-12-30 → 2025-12-14 A (-16d) | 2026-01-05 → 2025-12-22 A (-14d) | 0% → 100% | 12d → none |
| 2 | **Fire Hydrant** | 2025-12-30 → 2025-12-15 (-15d) | 2026-01-11 → 2026-01-01 (-10d) |  |  |
| CON-LEG101-SB-2100 | Pre-qualification and Material Submittal for Fire Hydrant | 2025-12-30 → 2025-12-15 A (-15d) | 2026-01-04 → 2025-12-29 A (-6d) | 0% → 100% | 6d → none |
| CON-LEG101-SB-2110 | Pre-qualification and Material Approval for Fire Hydrant | 2026-01-05 → 2025-12-17 A (-19d) | 2026-01-11 → 2026-01-01 A (-10d) | 0% → 100% | 7d → none |
| 3 | **Valves** | 2026-01-01 → 2025-12-15 (-17d) | 2026-01-12 → 2026-01-01 (-11d) |  |  |
| CON-LEG101-SB-2060 | Pre-qualification and Material Submittal for Valves | 2026-01-01 → 2025-12-15 A (-17d) | 2026-01-05 → 2025-12-29 A (-7d) | 0% → 100% | 6d → none |
| CON-LEG101-SB-2070 | Pre-qualification and Material Approval for Valves | 2026-01-06 → 2025-12-17 A (-20d) | 2026-01-12 → 2026-01-01 A (-11d) | 0% → 100% | 6d → none |

| ID | Task | Start | Finish | Complete | Total float |
| --- | --- | --- | --- | --- | --- |
| 5 | **Public Water Utility Distribution** | 2025-12-25 → 2025-12-13 (-12d) | 2026-01-11 → 2026-01-01 (-10d) |  |  |
| 1 | **HDPE Pipe (PN 16)** | 2025-12-25 → 2025-12-13 (-12d) | 2026-01-06 → 2025-12-22 (-15d) |  |  |
| CON-LEG101-SB-1380 | Pre-qualification and Material Submittal for HDPE Pipe (PN 16) | 2025-12-25 → 2025-12-13 A (-12d) | 2025-12-30 → 2025-12-22 A (-8d) | 0% → 100% | 7d → none |
| CON-LEG101-SB-1390 | Pre-qualification and Material Approval for HDPE Pipe (PN 16) | 2025-12-31 → 2025-12-14 A (-17d) | 2026-01-06 → 2025-12-22 A (-15d) | 0% → 100% | 11d → none |
| 4 | **Valves** | 2025-12-31 → 2025-12-15 (-16d) | 2026-01-11 → 2026-01-01 (-10d) |  |  |
| CON-LEG101-SB-2020 | Pre-qualification and Material Submittal for Valves | 2025-12-31 → 2025-12-15 A (-16d) | 2026-01-04 → 2025-12-29 A (-6d) | 0% → 100% | 7d → none |
| CON-LEG101-SB-2030 | Pre-qualification and Material Approval for Valves | 2026-01-05 → 2025-12-17 A (-19d) | 2026-01-11 → 2026-01-01 A (-10d) | 0% → 100% | 7d → none |
| 2 | **Bridge Works** | 2025-12-24 → 2025-12-30 (+6d) | 2026-01-11 → 2026-03-24 (+72d) |  |  |
| 3 | **Prestressing Strands** | 2025-12-24 → 2026-01-06 (+13d) | 2026-01-05 → 2026-01-31 (+26d) |  |  |
| CON-LEG101-SB-3740 | Pre-qualification and Material Submittal for Prestressing Strands | 2025-12-24 → 2026-01-06 A (+13d) | 2025-12-29 → 2026-01-12 A (+14d) | 0% → 100% | 7d → none |
| CON-LEG101-SB-3750 | Pre-qualification and Material Approval for Prestressing Strands | 2025-12-30 → 2026-01-20 A (+21d) | 2026-01-05 → 2026-01-31 A (+26d) | 0% → 100% | 12d → none |
| 5 | **Bridge Bearings** | 2025-12-30 → 2026-01-06 (+7d) | 2026-01-11 → 2026-01-31 (+20d) |  |  |
| CON-LEG101-SB-3780 | Pre-qualification and Material Submittal for Bridge Bearings | 2025-12-30 → 2026-01-06 A (+7d) | 2026-01-04 → 2026-01-12 A (+8d) | 0% → 100% | 7d → none |
| CON-LEG101-SB-3790 | Pre-qualification and Material Approval for Bridge Bearings | 2026-01-05 → 2026-01-12 A (+7d) | 2026-01-11 → 2026-01-31 A (+20d) | 0% → 100% | 7d → none |
| 6 | **Expansion Joints** | 2025-12-30 → 2026-01-07 (+8d) | 2026-01-11 → 2026-02-04 (+24d) |  |  |
| CON-LEG101-SB-3800 | Pre-qualification and Material Submittal for Expansion Joints | 2025-12-30 → 2026-01-07 A (+8d) | 2026-01-04 → 2026-01-17 A (+13d) | 0% → 100% | 7d → none |
| CON-LEG101-SB-3810 | Pre-qualification and Material Approval for Expansion Joints | 2026-01-05 → 2026-01-22 A (+17d) | 2026-01-11 → 2026-02-04 A (+24d) | 0% → 100% | 7d → none |
| 4 | **New Jersey** |  | 2026-01-11 → 2026-01-01 (-10d) |  |  |
| CON-LEG101-SB-3760 | Pre-qualification and Material Submittal for New Jersey | 2025-12-30 A | 2026-01-04 → 2025-12-30 A (-5d) | 0% → 100% | 7d → none |
| CON-LEG101-SB-3770 | Pre-qualification and Material Approval for New Jersey | 2026-01-05 → 2026-01-01 A (-4d) | 2026-01-11 → 2026-01-01 A (-10d) | 0% → 100% | 7d → none |
| 7 | **Guard Rail** | 2025-12-30 → 2026-01-14 (+15d) | 2026-01-11 → 2026-03-24 (+72d) |  |  |
| CON-LEG101-SB-3820 | Pre-qualification and Material Submittal for Guard Rail | 2025-12-30 → 2026-01-14 A (+15d) | 2026-01-04 → 2026-01-22 A (+18d) | 0% → 100% | 7d → none |
| CON-LEG101-SB-3830 | Pre-qualification and Material Approval for Guard Rail | 2026-01-05 → 2026-01-14 A (+9d) | 2026-01-11 → 2026-03-24 A (+72d) | 0% → 100% | 7d → none |
| 8 | **GRP Panel** | 2025-12-30 → 2026-01-15 (+16d) | 2026-01-11 → 2026-03-08 (+56d) |  |  |
| CON-LEG101-SB-3840 | Pre-qualification and Material Submittal for GRP Panel | 2025-12-30 → 2026-01-15 A (+16d) | 2026-01-04 → 2026-01-20 A (+16d) | 0% → 100% | 7d → none |
| CON-LEG101-SB-3850 | Pre-qualification and Material Approval for GRP Panel | 2026-01-05 → 2026-03-08 A (+62d) | 2026-01-11 → 2026-03-08 A (+56d) | 0% → 100% | 7d → none |
| 9 | **Logo MODON** | 2025-12-30 → 2026-01-14 (+15d) | 2026-01-11 → 2026-02-07 (+27d) |  |  |
| CON-LEG101-SB-3860 | Pre-qualification and Material Submittal for Logo MODON | 2025-12-30 → 2026-01-14 A (+15d) | 2026-01-04 → 2026-01-20 A (+16d) | 0% → 100% | 7d → none |
| CON-LEG101-SB-3870 | Pre-qualification and Material Approval for Logo MODON | 2026-01-05 → 2026-02-07 A (+33d) | 2026-01-11 → 2026-02-07 A (+27d) | 0% → 100% | 7d → none |
| 10 | **Bridge Gully (Scupper) drainage** | 2025-12-30 → 2026-01-01 (+2d) | 2026-01-11 → 2026-02-05 (+25d) |  |  |
| CON-LEG101-SB-3880 | Pre-qualification and Material Submittal for Bridge Gully (Scupper) drainage | 2025-12-30 → 2026-01-01 A (+2d) | 2026-01-04 → 2026-02-01 A (+28d) | 0% → 100% | 7d → none |
| CON-LEG101-SB-3890 | Pre-qualification and Material Approval for Bridge Gully (Scupper) drainage | 2026-01-05 → 2026-02-05 A (+31d) | 2026-01-11 → 2026-02-05 A (+25d) | 0% → 100% | 7d → none |
| 10 | **Fence & Gates** | 2025-12-20 → 2025-12-10 (-10d) | 2026-01-10 → 2026-01-24 (+14d) |  |  |
| 1 | **Metal Fence** | 2025-12-20 → 2025-12-10 (-10d) | 2025-12-31 → 2026-01-06 (+6d) |  |  |
| CON-LEG101-SB-2270 | Pre-qualification and Material Submittal for Metal Fence | 2025-12-20 → 2025-12-10 A (-10d) | 2025-12-24 → 2026-01-05 A (+12d) | 0% → 100% | 0d → none |
| CON-LEG101-SB-2310 | Pre-qualification and Material Approval for Metal Fence | 2025-12-25 → 2026-01-01 A (+7d) | 2025-12-31 → 2026-01-06 A (+6d) | 0% → 100% | 0d → none |
| 2 | **Gates** | 2025-12-23 → 2025-12-10 (-13d) | 2026-01-04 → 2026-01-06 (+2d) |  |  |
| CON-LEG101-SB-2290 | Pre-qualification and Material Submittal for Gates | 2025-12-23 → 2025-12-10 A (-13d) | 2025-12-28 → 2026-01-05 A (+8d) | 0% → 100% | 8d → none |
| CON-LEG101-SB-2330 | Pre-qualification and Material Approval for Gates | 2025-12-29 → 2026-01-01 A (+3d) | 2026-01-04 → 2026-01-06 A (+2d) | 0% → 100% | 13d → none |
| 3 | **Paint On Cement Plaster** | 2025-12-29 → 2025-12-16 (-13d) | 2026-01-10 → 2026-01-24 (+14d) |  |  |
| CON-LEG101-SB-3900 | Pre-qualification and Material Submittal for Paint On Cement Plaster | 2025-12-29 → 2025-12-16 A (-13d) | 2026-01-03 → 2025-12-16 A (-18d) | 0% → 100% | 8d → none |
| CON-LEG101-SB-3910 | Pre-qualification and Material Approval for Paint On Cement Plaster | 2026-01-04 → 2026-01-06 A (+2d) | 2026-01-10 → 2026-01-24 A (+14d) | 0% → 100% | 8d → none |
| 12 | **Telecommunications** | 2025-12-20 → 2025-12-13 (-7d) | 2026-01-19 → 2026-01-24 (+5d) |  |  |
| 2 | **Pipe for the Duct** | 2025-12-20 → 2025-12-13 (-7d) | 2026-01-03 → 2026-01-21 (+18d) |  |  |
| CON-LEG101-SB-3340 | Pre-qualification and Material Submittal for Pipe for the Duct | 2025-12-20 → 2025-12-13 A (-7d) | 2025-12-27 → 2026-01-18 A (+22d) | 0% → 100% | 0d → none |
| CON-LEG101-SB-3350 | Pre-qualification and Material Approval for Pipe for the Duct | 2025-12-28 → 2025-12-14 A (-14d) | 2026-01-03 → 2026-01-21 A (+18d) | 0% → 100% | 14d → none |
| 5 | **Low Voltage Cables** | 2025-12-28 → 2025-12-30 (+2d) | 2026-01-10 → 2026-01-24 (+14d) |  |  |
| CON-LEG101-SB-3380 | Pre-qualification and Material Submittal for Low Voltage Cables | 2025-12-28 → 2025-12-30 A (+2d) | 2026-01-03 → 2026-01-14 A (+11d) | 0% → 100% | 0d → none |
| CON-LEG101-SB-3390 | Pre-qualification and Material Approval for Low Voltage Cables | 2026-01-04 A | 2026-01-10 → 2026-01-24 A (+14d) | 0% → 100% | 8d → none |
| 4 | **Manhole** | 2026-01-04 → 2026-01-01 (-3d) | 2026-01-19 → 2026-01-06 (-13d) |  |  |
| CON-LEG101-SB-3360 | Pre-qualification and Material Submittal for Manhole | 2026-01-04 → 2026-01-01 A (-3d) | 2026-01-12 → 2026-01-01 A (-11d) | 0% → 100% | 0d → none |
| CON-LEG101-SB-3370 | Pre-qualification and Material Approval for Manhole | 2026-01-13 → 2026-01-06 A (-7d) | 2026-01-19 → 2026-01-06 A (-13d) | 0% → 100% | 0d → none |
| 4 | **Electrical Network** | 2025-12-20 → 2025-12-13 (-7d) | 2026-01-12 → 2026-10-12 (+273d) |  |  |
| 2 | **Pipe for the Duct** | 2025-12-20 → 2025-12-13 (-7d) | 2026-01-03 → 2026-01-21 (+18d) |  |  |
| CON-LEG101-SB-1240 | Pre-qualification and Material Submittal for Pipe for the Duct | 2025-12-20 → 2025-12-13 A (-7d) | 2025-12-27 → 2026-01-18 A (+22d) | 0% → 100% | 0d → none |
| CON-LEG101-SB-1270 | Pre-qualification and Material Approval for Pipe for the Duct | 2025-12-28 → 2025-12-14 A (-14d) | 2026-01-03 → 2026-01-21 A (+18d) | 0% → 100% | 8d → none |
| 5 | **Low Voltage Cables** | 2025-12-28 → 2025-12-30 (+2d) | 2026-01-06 → 2026-01-24 (+18d) |  |  |
| CON-LEG101-SB-1780 | Pre-qualification and Material Submittal for Low Voltage Cables | 2025-12-28 → 2025-12-30 A (+2d) | 2025-12-30 → 2026-01-14 A (+15d) | 0% → 100% | 0d → none |
| CON-LEG101-SB-1790 | Pre-qualification and Material Approval for Low Voltage Cables | 2025-12-31 → 2026-01-04 A (+4d) | 2026-01-06 → 2026-01-24 A (+18d) | 0% → 100% | 11d → none |
| 6 | **Lighting poles** | 2025-12-31 → 2025-12-28 (-3d) | 2026-01-12 → 2026-01-24 (+12d) |  |  |
| CON-LEG101-SB-1820 | Pre-qualification and Material Submittal for Lighting poles | 2025-12-31 → 2025-12-28 A (-3d) | 2026-01-05 → 2026-01-14 A (+9d) | 0% → 100% | 6d → none |
| CON-LEG101-SB-1830 | Pre-qualification and Material Approval for Lighting poles | 2026-01-06 → 2026-01-04 A (-2d) | 2026-01-12 → 2026-01-24 A (+12d) | 0% → 100% | 6d → none |
| 7 | **Street Lighting Luminaire** | 2025-12-31 → 2025-12-28 (-3d) | 2026-01-12 → 2026-01-24 (+12d) |  |  |
| CON-LEG101-SB-1860 | Pre-qualification and Material Submittal for Street Lighting Luminaire | 2025-12-31 → 2025-12-28 A (-3d) | 2026-01-05 → 2026-01-14 A (+9d) | 0% → 100% | 6d → none |
| CON-LEG101-SB-1870 | Pre-qualification and Material Approval for Street Lighting Luminaire | 2026-01-06 A | 2026-01-12 → 2026-01-24 A (+12d) | 0% → 100% | 6d → none |
| 11 | **Medium Voltage Cable** | 2025-12-31 → 2025-12-30 (-1d) | 2026-01-12 → 2026-02-05 (+24d) |  |  |
| CON-LEG101-SB-1660 | Pre-qualification and Material Submittal for Medium Voltage Cable | 2025-12-31 → 2025-12-30 A (-1d) | 2026-01-05 → 2026-01-28 A (+23d) | 0% → 100% | 6d → none |
| CON-LEG101-SB-1670 | Pre-qualification and Material Approval for Medium Voltage Cable | 2026-01-06 → 2026-01-04 A (-2d) | 2026-01-12 → 2026-02-05 A (+24d) | 0% → 100% | 6d → none |
| 3 | **Cable Termination & Joints** | 2025-12-31 → 2025-12-30 (-1d) | 2026-01-10 → 2026-02-05 (+26d) |  |  |
| CON-LEG101-SB-1300 | Pre-qualification and Material Submittal for Cable Termination & Joints | 2025-12-31 → 2025-12-30 A (-1d) | 2026-01-03 → 2026-01-28 A (+25d) | 0% → 100% | 8d → none |

| ID | Task | Start | Finish | Complete | Total float |
| --- | --- | --- | --- | --- | --- |
| CON-LEG101-SB-1310 | Pre-qualification and Material Approval for Cable Termination & Joints | 2026-01-04 A | 2026-01-10 → 2026-02-05 A (+26d) | 0% → 100% | 8d → none |
| 13 | **Ring Main Unit** | 2025-12-31 → 2026-01-13 (+13d) | 2026-01-10 → 2026-10-12 (+275d) |  |  |
| CON-LEG101-SB-1710 | Pre-qualification and Material Approval for Ring Main Unit | 2026-01-04 → 2026-01-13 A (+9d) | 2026-01-10 → 2026-10-12 (+275d) | 0% → 30% | 8d → -37.2d |
| CON-LEG101-SB-1700 | Pre-qualification and Material Submittal for Ring Main Unit | 2025-12-31 → 2026-01-14 A (+14d) | 2026-01-03 → 2026-01-14 A (+11d) | 0% → 100% | 8d → none |
| 14 | **Street Lighting Sub-station** | 2025-12-31 → 2026-01-13 (+13d) | 2026-01-10 → 2026-10-12 (+275d) |  |  |
| CON-LEG101-SB-1750 | Pre-qualification and Material Approval for Street Lighting Sub-station | 2026-01-04 → 2026-01-13 A (+9d) | 2026-01-10 → 2026-10-12 (+275d) | 0% → 30% | 8d → -32.2d |
| CON-LEG101-SB-1740 | Pre-qualification and Material Submittal for Street Lighting Sub-station | 2025-12-31 → 2026-01-14 A (+14d) | 2026-01-03 → 2026-01-14 A (+11d) | 0% → 100% | 8d → none |
| 4 | **Earthing System** | 2025-12-31 → 2026-01-14 (+14d) | 2026-01-10 → 2026-01-21 (+11d) |  |  |
| CON-LEG101-SB-1340 | Pre-qualification and Material Submittal for Earthing System | 2025-12-31 → 2026-01-14 A (+14d) | 2026-01-03 → 2026-01-14 A (+11d) | 0% → 100% | 8d → none |
| CON-LEG101-SB-1350 | Pre-qualification and Material Approval for Earthing System | 2026-01-04 → 2026-01-21 A (+17d) | 2026-01-10 → 2026-01-21 A (+11d) | 0% → 100% | 8d → none |
| 1 | **Lighting panels** | 2025-12-31 → 2026-01-13 (+13d) | 2026-01-10 → 2026-04-15 (+95d) |  |  |
| CON-LEG101-SB-2430 | Pre-qualification and Material Approval for Lighting panels | 2026-01-04 → 2026-01-13 A (+9d) | 2026-01-10 → 2026-04-15 A (+95d) | 0% → 100% | 8d → none |
| CON-LEG101-SB-2390 | Pre-qualification and Material Submittal for Lighting panels | 2025-12-31 → 2026-01-14 A (+14d) | 2026-01-03 → 2026-01-14 A (+11d) | 0% → 100% | 8d → none |
| 8 | **System for KWHM** | 2025-12-31 → 2026-01-13 (+13d) | 2026-01-10 → 2026-04-15 (+95d) |  |  |
| CON-LEG101-SB-1910 | Pre-qualification and Material Approval for System for KWHM | 2026-01-04 → 2026-01-13 A (+9d) | 2026-01-10 → 2026-04-15 A (+95d) | 0% → 100% | 8d → none |
| CON-LEG101-SB-1900 | Pre-qualification and Material Submittal for System for KWHM | 2025-12-31 → 2026-01-14 A (+14d) | 2026-01-03 → 2026-01-14 A (+11d) | 0% → 100% | 8d → none |
| 9 | **Feeder Piller** | 2025-12-31 → 2026-01-13 (+13d) | 2026-01-10 → 2026-04-15 (+95d) |  |  |
| CON-LEG101-SB-1950 | Pre-qualification and Material Approval for Feeder Piller | 2026-01-04 → 2026-01-13 A (+9d) | 2026-01-10 → 2026-04-15 A (+95d) | 0% → 100% | 8d → none |
| CON-LEG101-SB-1940 | Pre-qualification and Material Submittal for Feeder Piller | 2025-12-31 → 2026-01-14 A (+14d) | 2026-01-03 → 2026-01-14 A (+11d) | 0% → 100% | 8d → none |
| 10 | **Street Lighting Panels** | 2025-12-31 → 2026-01-14 (+14d) | 2026-01-10 → 2026-04-15 (+95d) |  |  |
| CON-LEG101-SB-1980 | Pre-qualification and Material Submittal for Street Lighting Panels | 2025-12-31 → 2026-01-14 A (+14d) | 2026-01-03 → 2026-01-14 A (+11d) | 0% → 100% | 8d → none |
| CON-LEG101-SB-1990 | Pre-qualification and Material Approval for Street Lighting Panels | 2026-01-04 → 2026-01-14 A (+10d) | 2026-01-10 → 2026-04-15 A (+95d) | 0% → 100% | 8d → none |
| 8 | **CCTV feeding system and GSM** | 2025-12-28 → 2026-01-12 (+15d) | 2026-01-19 → 2026-04-05 (+76d) |  |  |
| 2 | **Fiber Optic Patch Panel 12 port** | 2025-12-28 → 2026-01-12 (+15d) | 2026-01-10 → 2026-04-05 (+85d) |  |  |
| CON-LEG101-SB-3400 | Pre-qualification and Material Submittal for Fiber Optic Patch Panel 12 port | 2025-12-28 → 2026-01-12 A (+15d) | 2026-01-03 → 2026-01-15 A (+12d) | 0% → 100% | 0d → none |
| CON-LEG101-SB-3410 | Pre-qualification and Material Approval for Fiber Optic Patch Panel 12 port | 2026-01-04 → 2026-01-20 A (+16d) | 2026-01-10 → 2026-04-05 A (+85d) | 0% → 100% | 8d → none |
| 5 | **Modular Industrial Switches for main pole** | 2026-01-04 → 2026-01-12 (+8d) | 2026-01-13 → 2026-04-05 (+82d) |  |  |
| CON-LEG101-SB-3500 | Pre-qualification and Material Submittal for Modular Industrial Switches for main pole | 2026-01-04 → 2026-01-12 A (+8d) | 2026-01-06 → 2026-01-15 A (+9d) | 0% → 100% | 0d → none |
| CON-LEG101-SB-3510 | Pre-qualification and Material Approval for Modular Industrial Switches for main pole | 2026-01-07 → 2026-01-20 A (+13d) | 2026-01-13 → 2026-04-05 A (+82d) | 0% → 100% | 5d → none |
| 11 | **8POE ports Industrial Switches for remote poles** | 2026-01-07 → 2026-01-12 (+5d) | 2026-01-19 → 2026-04-05 (+76d) |  |  |
| CON-LEG101-SB-3440 | Pre-qualification and Material Submittal for 8POE ports Industrial Switches for remote poles | 2026-01-07 → 2026-01-12 A (+5d) | 2026-01-12 → 2026-01-15 A (+3d) | 0% → 100% | 0d → none |
| CON-LEG101-SB-3450 | Pre-qualification and Material Approval for 8POE ports Industrial Switches for remote poles | 2026-01-13 → 2026-01-20 A (+7d) | 2026-01-19 → 2026-04-05 A (+76d) | 0% → 100% | 0d → none |
| 3 | **Core Switch** | 2026-01-07 → 2026-01-12 (+5d) | 2026-01-19 → 2026-04-05 (+76d) |  |  |
| CON-LEG101-SB-3420 | Pre-qualification and Material Submittal for Core Switch | 2026-01-07 → 2026-01-12 A (+5d) | 2026-01-12 → 2026-01-15 A (+3d) | 0% → 100% | 0d → none |
| CON-LEG101-SB-3430 | Pre-qualification and Material Approval for Core Switch | 2026-01-13 → 2026-01-20 A (+7d) | 2026-01-19 → 2026-04-05 A (+76d) | 0% → 100% | 0d → none |
| 13 | **Access Switch 48 port** | 2026-01-07 → 2026-01-12 (+5d) | 2026-01-19 → 2026-04-05 (+76d) |  |  |
| CON-LEG101-SB-3460 | Pre-qualification and Material Submittal for Access Switch 48 port | 2026-01-07 → 2026-01-12 A (+5d) | 2026-01-12 → 2026-01-15 A (+3d) | 0% → 100% | 0d → none |
| CON-LEG101-SB-3470 | Pre-qualification and Material Approval for Access Switch 48 port | 2026-01-13 → 2026-01-20 A (+7d) | 2026-01-19 → 2026-04-05 A (+76d) | 0% → 100% | 0d → none |
| 14 | **Server** | 2026-01-07 → 2026-01-12 (+5d) | 2026-01-19 → 2026-04-05 (+76d) |  |  |
| CON-LEG101-SB-3480 | Pre-qualification and Material Submittal for Server | 2026-01-07 → 2026-01-12 A (+5d) | 2026-01-12 → 2026-01-15 A (+3d) | 0% → 100% | 0d → none |
| CON-LEG101-SB-3490 | Pre-qualification and Material Approval for Server | 2026-01-13 → 2026-01-20 A (+7d) | 2026-01-19 → 2026-04-05 A (+76d) | 0% → 100% | 0d → none |
| 6 | **Stand rack 42U- 19"** | 2026-01-07 → 2026-01-12 (+5d) | 2026-01-19 → 2026-04-05 (+76d) |  |  |
| CON-LEG101-SB-3520 | Pre-qualification and Material Submittal for Stand rack 42U- 19" | 2026-01-07 → 2026-01-12 A (+5d) | 2026-01-12 → 2026-01-15 A (+3d) | 0% → 100% | 0d → none |
| CON-LEG101-SB-3530 | Pre-qualification and Material Approval for Stand rack 42U- 19" | 2026-01-13 → 2026-01-20 A (+7d) | 2026-01-19 → 2026-04-05 A (+76d) | 0% → 100% | 0d → none |
| 1 | **IP Outdoor CCTV POE Camera,5 MP, Metal Housing** | 2026-01-07 → 2026-01-12 (+5d) | 2026-01-19 → 2026-04-05 (+76d) |  |  |
| CON-LEG101-SB-3620 | Pre-qualification and Material Submittal for IP Outdoor CCTV POE Camera,5 MP, Metal Housing | 2026-01-07 → 2026-01-12 A (+5d) | 2026-01-12 → 2026-01-15 A (+3d) | 0% → 100% | 0d → none |
| CON-LEG101-SB-3630 | Pre-qualification and Material Approval for IP Outdoor CCTV POE Camera,5 MP, Metal Housing | 2026-01-13 → 2026-01-20 A (+7d) | 2026-01-19 → 2026-04-05 A (+76d) | 0% → 100% | 0d → none |
| 7 | **Outdoor PTZ with IR, HDTV 1080 and 31x optical, 12x digital** | 2026-01-07 → 2026-01-12 (+5d) | 2026-01-19 → 2026-04-05 (+76d) |  |  |
| CON-LEG101-SB-3540 | Pre-qualification and Material Submittal for Outdoor PTZ with IR, HDTV 1080 and 31x optical, 12x digital | 2026-01-07 → 2026-01-12 A (+5d) | 2026-01-12 → 2026-01-15 A (+3d) | 0% → 100% | 0d → none |
| CON-LEG101-SB-3550 | Pre-qualification and Material Approval for Outdoor PTZ with IR, HDTV 1080 and 31x optical, 12x digital | 2026-01-13 → 2026-01-20 A (+7d) | 2026-01-19 → 2026-04-05 A (+76d) | 0% → 100% | 0d → none |
| 8 | **Security workstation with 1 x 19" LED screen** | 2026-01-07 → 2026-01-12 (+5d) | 2026-01-19 → 2026-04-05 (+76d) |  |  |
| CON-LEG101-SB-3560 | Pre-qualification and Material Submittal for Security workstation with 1 x 19" LED screen | 2026-01-07 → 2026-01-12 A (+5d) | 2026-01-12 → 2026-01-15 A (+3d) | 0% → 100% | 0d → none |
| CON-LEG101-SB-3570 | Pre-qualification and Material Approval for Security workstation with 1 x 19" LED screen | 2026-01-13 → 2026-01-20 A (+7d) | 2026-01-19 → 2026-04-05 A (+76d) | 0% → 100% | 0d → none |
| 9 | **LED Screen 43" (24/7 operation) with Ethernet decoders** | 2026-01-07 → 2026-01-12 (+5d) | 2026-01-19 → 2026-04-05 (+76d) |  |  |
| CON-LEG101-SB-3580 | Pre-qualification and Material Submittal for LED Screen 43" (24/7 operation) with Ethernet decoders | 2026-01-07 → 2026-01-12 A (+5d) | 2026-01-12 → 2026-01-15 A (+3d) | 0% → 100% | 0d → none |
| CON-LEG101-SB-3590 | Pre-qualification and Material Approval for LED Screen 43" (24/7 operation) with Ethernet decoders | 2026-01-13 → 2026-01-20 A (+7d) | 2026-01-19 → 2026-04-05 A (+76d) | 0% → 100% | 0d → none |
| 10 | **Network Video Recorder 4k 64 Channel** | 2026-01-07 → 2026-01-12 (+5d) | 2026-01-19 → 2026-04-05 (+76d) |  |  |
| CON-LEG101-SB-3600 | Pre-qualification and Material Submittal for Network Video Recorder 4k 64 Channel | 2026-01-07 → 2026-01-12 A (+5d) | 2026-01-12 → 2026-01-15 A (+3d) | 0% → 100% | 0d → none |
| CON-LEG101-SB-3610 | Pre-qualification and Material Approval for Network Video Recorder 4k 64 Channel | 2026-01-13 → 2026-01-20 A (+7d) | 2026-01-19 → 2026-04-05 A (+76d) | 0% → 100% | 0d → none |
| 12 | **Keypad** | 2026-01-07 → 2026-01-12 (+5d) | 2026-01-19 → 2026-04-05 (+76d) |  |  |
| CON-LEG101-SB-3640 | Pre-qualification and Material Submittal for Keypad | 2026-01-07 → 2026-01-12 A (+5d) | 2026-01-12 → 2026-01-15 A (+3d) | 0% → 100% | 0d → none |
| CON-LEG101-SB-3650 | Pre-qualification and Material Approval for Keypad | 2026-01-13 → 2026-01-20 A (+7d) | 2026-01-19 → 2026-04-05 A (+76d) | 0% → 100% | 0d → none |
| 15 | **Horizontal Power Distribution Unit (min 8 outlets)** | 2026-01-07 → 2026-01-12 (+5d) | 2026-01-19 → 2026-04-05 (+76d) |  |  |
| CON-LEG101-SB-3660 | Pre-qualification and Material Submittal for Horizontal Power Distribution Unit (min 8 outlets) | 2026-01-07 → 2026-01-12 A (+5d) | 2026-01-12 → 2026-01-15 A (+3d) | 0% → 100% | 0d → none |
| CON-LEG101-SB-3670 | Pre-qualification and Material Approval for Horizontal Power Distribution Unit (min 8 outlets) | 2026-01-13 → 2026-01-20 A (+7d) | 2026-01-19 → 2026-04-05 A (+76d) | 0% → 100% | 0d → none |
| 16 | **35 Meters mono pole with Double Platform for Access Points** | 2026-01-07 → 2026-01-12 (+5d) | 2026-01-19 → 2026-04-05 (+76d) |  |  |
| CON-LEG101-SB-3680 | Pre-qualification and Material Submittal for 35 Meters mono pole with Double Platform for Access Points | 2026-01-07 → 2026-01-12 A (+5d) | 2026-01-12 → 2026-01-15 A (+3d) | 0% → 100% | 0d → none |
| CON-LEG101-SB-3690 | Pre-qualification and Material Approval for 35 Meters mono pole with Double Platform for Access Points | 2026-01-13 → 2026-01-20 A (+7d) | 2026-01-19 → 2026-04-05 A (+76d) | 0% → 100% | 0d → none |
| 17 | **25 Meters pole for CCTV Cameras** | 2026-01-07 → 2026-01-12 (+5d) | 2026-01-19 → 2026-04-05 (+76d) |  |  |
| CON-LEG101-SB-3700 | Pre-qualification and Material Submittal for 25 Meters pole for CCTV Cameras | 2026-01-07 → 2026-01-12 A (+5d) | 2026-01-12 → 2026-01-15 A (+3d) | 0% → 100% | 0d → none |

| ID | Task | Start | Finish | Complete | Total float | Other |
| --- | --- | --- | --- | --- | --- | --- |
| CON-LEG101-SB-3710 | Pre-qualification and Material Approval for 25 Meters pole for CCTV Cameras | 2026-01-13 → 2026-01-20 A (+7d) | 2026-01-19 → 2026-04-05 A (+76d) | 0% → 100% | 0d → none |  |
| 18 | **Short Range wireless point to point wireless bridge** | 2026-01-07 → 2026-01-12 (+5d) | 2026-01-19 → 2026-04-05 (+76d) |  |  |  |
| CON-LEG101-SB-3720 | Pre-qualification and Material Submittal for Short Range wireless point to point wireless bridge | 2026-01-07 → 2026-01-12 A (+5d) | 2026-01-12 → 2026-01-15 A (+3d) | 0% → 100% | 0d → none |  |
| CON-LEG101-SB-3730 | Pre-qualification and Material Approval for Short Range wireless point to point wireless bridge | 2026-01-13 → 2026-01-20 A (+7d) | 2026-01-19 → 2026-04-05 A (+76d) | 0% → 100% | 0d → none |  |
| 11 | **Irrigation Works** | 2025-12-30 → 2026-01-03 (+4d) | 2026-01-15 → 2026-02-19 (+35d) |  |  |  |
| 2 | **16 mm dia (O.D.) linear low density polyethylene tubing** | 2025-12-30 → 2026-01-03 (+4d) | 2026-01-11 → 2026-01-06 (-5d) |  |  |  |
| CON-LEG101-SB-3930 | Pre-qualification and Material Submittal for Steel Fence for 16 mm dia (O.D.) linear low density polyethylene tubing | 2025-12-30 → 2026-01-03 A (+4d) | 2026-01-04 → 2026-01-03 A (-1d) | 0% → 100% | 3d → none |  |
| CON-LEG101-SB-3950 | Pre-qualification and Material Approval for Steel Fence for 16 mm dia (O.D.) linear low density polyethylene tubing | 2026-01-05 → 2026-01-06 A (+1d) | 2026-01-11 → 2026-01-06 A (-5d) | 0% → 100% | 7d → none |  |
| 3 | **Irrigation Controller** | 2026-01-01 → 2026-01-13 (+12d) | 2026-01-13 → 2026-02-19 (+37d) |  |  |  |
| CON-LEG101-SB-3960 | Pre-qualification and Material Submittal for Steel Fence for Irrigation Controller | 2026-01-01 → 2026-01-13 A (+12d) | 2026-01-06 → 2026-01-13 A (+7d) | 0% → 100% | 3d → none |  |
| CON-LEG101-SB-3970 | Pre-qualification and Material Approval for Steel Fence for Irrigation Controller | 2026-01-07 → 2026-01-20 A (+13d) | 2026-01-13 → 2026-02-19 A (+37d) | 0% → 100% | 5d → none | resources Supply and installation of Advanced Irrigation controller subject to client approval, can connect with Centarl Control system and cabable to integrate with Smart City systems,BMS or Scada system ,Can record the real flow rate per stations, [0.03]; Supply and installation of Decoder cables 12 AWG between valves and controllers, The cables shall be pulled through 32Ø UPVC conduit and inspection 10" round valve box every 100 meters, as per standard specification and drawings [96.75]; Skilled Labor [122 h] → Supply and installation of Advanced Irrigation controller subject to client approval, can connect with Centarl Control system and cabable to integrate with Smart City systems,BMS or Scada system ,Can record the real flow rate per stations, [0.03]; Supply and installation of Decoder cables 12 AWG between valves and controllers, The cables shall be pulled through 32? UPVC conduit and inspection 10" round valve box every 100 meters, as per standard specification and drawings [96.75]; Skilled Labor [122 h] |
| 4 | **Single station decoder** | 2026-01-03 → 2026-01-13 (+10d) | 2026-01-14 → 2026-02-19 (+36d) |  |  |  |
| CON-LEG101-SB-3980 | Pre-qualification and Material Submittal for Steel Fence for Single station decoder | 2026-01-03 → 2026-01-13 A (+10d) | 2026-01-07 → 2026-01-13 A (+6d) | 0% → 100% | 3d → none |  |
| CON-LEG101-SB-3990 | Pre-qualification and Material Approval for Steel Fence for Single station decoder | 2026-01-08 → 2026-01-20 A (+12d) | 2026-01-14 → 2026-02-19 A (+36d) | 0% → 100% | 4d → none |  |
| 5 | **Decoder cables 12 AWG** | 2026-01-04 → 2026-01-13 (+9d) | 2026-01-15 → 2026-02-19 (+35d) |  |  |  |
| CON-LEG101-SB-4000 | Pre-qualification and Material Submittal for Steel Fence for Decoder cables 12 AWG | 2026-01-04 → 2026-01-13 A (+9d) | 2026-01-08 → 2026-01-13 A (+5d) | 0% → 100% | 3d → none |  |
| CON-LEG101-SB-4010 | Pre-qualification and Material Approval for Steel Fence for Decoder cables 12 AWG | 2026-01-10 → 2026-01-26 A (+16d) | 2026-01-15 → 2026-02-19 A (+35d) | 0% → 100% | 3d → none |  |
| 1 | **Flush valve** | 2026-01-04 → 2026-01-13 (+9d) | 2026-01-15 → 2026-02-19 (+35d) |  |  |  |
| CON-LEG101-SB-3920 | Pre-qualification and Material Submittal for Steel Gate for Flush valve | 2026-01-04 → 2026-01-13 A (+9d) | 2026-01-08 → 2026-01-13 A (+5d) | 0% → 100% | 3d → none |  |
| CON-LEG101-SB-3940 | Pre-qualification and Material Approval for Steel Gate for Flush valve | 2026-01-10 → 2026-01-20 A (+10d) | 2026-01-15 → 2026-02-19 A (+35d) | 0% → 100% | 3d → none |  |
| 9 | **Landscape Works** | 2025-12-30 → 2025-12-11 (-19d) | 2026-01-12 → 2026-03-02 (+49d) |  |  |  |
| 1 | **HDPE Pipes** | 2025-12-30 → 2025-12-11 (-19d) | 2026-01-08 → 2025-12-22 (-17d) |  |  |  |
| CON-LEG101-SB-4020 | Pre-qualification and Material Submittal for HDPE Pipes | 2025-12-30 → 2025-12-11 A (-19d) | 2026-01-01 → 2025-12-22 A (-10d) | 0% → 100% | 6d → none |  |
| CON-LEG101-SB-4040 | Pre-qualification and Material Approval for HDPE Pipes | 2026-01-03 → 2025-12-13 A (-21d) | 2026-01-08 → 2025-12-22 A (-17d) | 0% → 100% | 9d → none |  |
| 7 | **Decoder Cables** | 2026-01-03 → 2026-01-13 (+10d) | 2026-01-12 → 2026-02-19 (+38d) |  |  |  |
| CON-LEG101-SB-4140 | Pre-qualification and Material Submittal for Decoder Cables | 2026-01-03 → 2026-01-13 A (+10d) | 2026-01-05 → 2026-01-13 A (+8d) | 0% → 100% | 6d → none |  |
| CON-LEG101-SB-4150 | Pre-qualification and Material Approval for Decoder Cables | 2026-01-06 → 2026-01-20 A (+14d) | 2026-01-12 → 2026-02-19 A (+38d) | 0% → 100% | 6d → none |  |
| 9 | **Curbs and edging** | 2026-01-03 → 2025-12-27 (-7d) | 2026-01-12 → 2026-02-16 (+35d) |  |  |  |
| CON-LEG101-SB-4180 | Pre-qualification and Material Submittal for Curbs and edging | 2026-01-03 → 2025-12-27 A (-7d) | 2026-01-05 → 2026-02-15 A (+41d) | 0% → 100% | 6d → none |  |
| CON-LEG101-SB-4190 | Pre-qualification and Material Approval for Curbs and edging | 2026-01-06 → 2025-12-30 A (-7d) | 2026-01-12 → 2026-02-16 A (+35d) | 0% → 100% | 6d → none |  |
| 2 | **Electrical Solenoid Valve** | 2026-01-03 → 2026-01-13 (+10d) | 2026-01-12 → 2026-02-19 (+38d) |  |  |  |
| CON-LEG101-SB-4030 | Pre-qualification and Material Submittal for Electrical Solenoid Valve | 2026-01-03 → 2026-01-13 A (+10d) | 2026-01-05 → 2026-01-13 A (+8d) | 0% → 100% | 6d → none |  |
| CON-LEG101-SB-4050 | Pre-qualification and Material Approval for Electrical Solenoid Valve | 2026-01-06 → 2026-01-20 A (+14d) | 2026-01-12 → 2026-02-19 A (+38d) | 0% → 100% | 6d → none |  |
| 3 | **Quick coupler valve** | 2026-01-03 → 2026-01-13 (+10d) | 2026-01-12 → 2026-02-19 (+38d) |  |  |  |
| CON-LEG101-SB-4060 | Pre-qualification and Material Submittal for Quick coupler valve | 2026-01-03 → 2026-01-13 A (+10d) | 2026-01-05 → 2026-01-13 A (+8d) | 0% → 100% | 6d → none |  |
| CON-LEG101-SB-4070 | Pre-qualification and Material Approval for Quick coupler valve | 2026-01-06 → 2026-01-20 A (+14d) | 2026-01-12 → 2026-02-19 A (+38d) | 0% → 100% | 6d → none |  |
| 4 | **Flush valve** | 2026-01-03 → 2026-01-13 (+10d) | 2026-01-12 → 2026-02-19 (+38d) |  |  |  |
| CON-LEG101-SB-4080 | Pre-qualification and Material Submittal for Flush valve | 2026-01-03 → 2026-01-13 A (+10d) | 2026-01-05 → 2026-01-13 A (+8d) | 0% → 100% | 6d → none |  |
| CON-LEG101-SB-4090 | Pre-qualification and Material Approval for Flush valve | 2026-01-06 → 2026-01-20 A (+14d) | 2026-01-12 → 2026-02-19 A (+38d) | 0% → 100% | 6d → none |  |
| 5 | **Irrigation controller** | 2026-01-03 → 2026-01-13 (+10d) | 2026-01-12 → 2026-02-19 (+38d) |  |  |  |
| CON-LEG101-SB-4100 | Pre-qualification and Material Submittal for Irrigation controller | 2026-01-03 → 2026-01-13 A (+10d) | 2026-01-05 → 2026-01-13 A (+8d) | 0% → 100% | 6d → none |  |
| CON-LEG101-SB-4110 | Pre-qualification and Material Approval for Irrigation controller | 2026-01-06 → 2026-01-20 A (+14d) | 2026-01-12 → 2026-02-19 A (+38d) | 0% → 100% | 6d → none |  |
| 6 | **Decoder for valve** | 2026-01-03 → 2026-01-13 (+10d) | 2026-01-12 → 2026-02-19 (+38d) |  |  |  |
| CON-LEG101-SB-4120 | Pre-qualification and Material Submittal for Decoder for valve | 2026-01-03 → 2026-01-13 A (+10d) | 2026-01-05 → 2026-01-13 A (+8d) | 0% → 100% | 6d → none |  |
| CON-LEG101-SB-4130 | Pre-qualification and Material Approval for Decoder for valve | 2026-01-06 → 2026-01-20 A (+14d) | 2026-01-12 → 2026-02-19 A (+38d) | 0% → 100% | 6d → none |  |
| 8 | **Shrubs And Ground Cover** | 2026-01-03 → 2026-01-13 (+10d) | 2026-01-12 → 2026-03-02 (+49d) |  |  |  |
| CON-LEG101-SB-4160 | Pre-qualification and Material Submittal for agricultural soil | 2026-01-03 → 2026-01-13 A (+10d) | 2026-01-05 → 2026-01-13 A (+8d) | 0% → 100% | 6d → none |  |
| CON-LEG101-SB-4170 | Pre-qualification and Material Approval for agricultural soil | 2026-01-06 → 2026-01-22 A (+16d) | 2026-01-12 → 2026-03-02 A (+49d) | 0% → 100% | 6d → none |  |
| 4 | **Procurement** | 2025-12-28 → 2025-11-25 (-33d) | 2027-09-14 → 2027-09-07 (-7d) |  |  |  |
| 2 | **Short Lead Item** | 2025-12-28 → 2025-11-25 (-33d) | 2027-04-06 → 2027-08-09 (+125d) |  |  |  |
| 1 | **Road Works - Civil** | 2025-12-28 → 2025-11-25 (-33d) | 2027-04-06 → 2027-08-09 (+125d) |  |  |  |
| 1 | **Steel Reinforcement** | 2025-12-28 → 2025-12-02 (-26d) | 2026-01-24 → 2026-04-02 (+68d) |  |  |  |
| CON-LEG101-PR-1390 | PO for Steel Reinforcement | 2025-12-28 → 2025-12-02 A (-26d) | 2025-12-30 → 2025-12-02 A (-28d) | 0% → 100% | 0d → none |  |
| CON-LEG101-PR-1410 | Material Delivery for Steel Reinforcement | 2025-12-31 → 2025-12-16 A (-15d) | 2026-01-24 → 2026-04-02 A (+68d) | 0% → 100% | 0d → none |  |
| 2 | **Ready Mixed Concrete** | 2025-12-31 → 2025-12-17 (-14d) | 2026-02-17 → 2026-03-31 (+42d) |  |  |  |
| CON-LEG101-PR-1420 | PO for Ready Mixed Concrete | 2025-12-31 → 2025-12-17 A (-14d) | 2026-01-05 → 2025-12-17 A (-19d) | 0% → 100% | 16d → none |  |
| CON-LEG101-PR-1430 | Material Delivery for Ready Mixed Concrete | 2026-01-25 → 2025-12-21 A (-35d) | 2026-02-17 → 2026-03-31 A (+42d) | 0% → 100% | 0d → none |  |
| 4 | **Backfilling Materials** | 2026-01-06 → 2025-11-25 (-42d) | 2026-02-26 → 2026-03-31 (+33d) |  |  |  |
| CON-LEG101-PR-3990 | PO for Backfilling Materials | 2026-01-06 → 2025-11-25 A (-42d) | 2026-01-11 → 2025-11-25 A (-47d) | 0% → 100% | 20d → none |  |
| CON-LEG101-PR-4000 | Material Delivery for Backfilling Materials | 2026-02-02 → 2025-12-01 A (-63d) | 2026-02-26 → 2026-03-31 A (+33d) | 0% → 100% | 7d → none |  |
| 5 | **Aggregate Base Course** | 2026-01-12 → 2025-12-20 (-23d) | 2026-06-14 → 2026-05-21 (-24d) |  |  |  |
| CON-LEG101-PR-1470 | PO for Aggregate Base Course | 2026-01-12 → 2025-12-20 A (-23d) | 2026-01-17 → 2025-12-20 A (-28d) | 0% → 100% | 20d → none |  |
| CON-LEG101-PR-1490 | Material Delivery for Aggregate Base Course | 2026-05-17 → 2026-01-15 A (-122d) | 2026-06-14 → 2026-05-21 A (-24d) | 0% → 100% | 10d → none |  |
| 7 | **Precast Concrete Kerb** | 2026-01-12 → 2026-02-01 (+20d) | 2026-12-06 → 2026-07-23 (-136d) |  |  |  |
| CON-LEG101-PR-1520 | PO for Precast Concrete Kerb | 2026-01-12 → 2026-02-01 A (+20d) | 2026-01-17 → 2026-02-02 A (+16d) | 0% → 100% | 20d → none |  |
| CON-LEG101-PR-1540 | Material Delivery for Precast Concrete Kerb | 2026-11-12 → 2026-05-02 A (-194d) | 2026-12-06 → 2026-07-23 A (-136d) | 0% → 100% | 16d → none |  |
| 8 | **Interlocking Block Pavers** | 2026-01-12 → 2026-06-11 (+150d) | 2026-12-06 → 2026-07-30 (-129d) |  |  |  |
| CON-LEG101-PR-1550 | PO for Interlocking Block Pavers | 2026-01-12 → 2026-06-11 A (+150d) | 2026-01-17 → 2026-06-11 A (+145d) | 0% → 100% | 20d → none |  |
| CON-LEG101-PR-1570 | Material Delivery for Interlocking Block Pavers | 2026-11-12 → 2026-06-13 A (-152d) | 2026-12-06 → 2026-07-30 A (-129d) | 0% → 100% | 16d → none |  |
| 3 | **Water Proofing** | 2026-01-06 → 2026-01-03 (-3d) | 2026-03-15 → 2026-03-05 (-10d) |  |  |  |

| ID | Task | Start | Finish | Complete | Total float |
| --- | --- | --- | --- | --- | --- |
| CON-LEG101-PR-1460 | Material Delivery for Water Proofing | 2026-02-18 → 2026-01-03 A (-46d) | 2026-03-15 → 2026-03-05 A (-10d) | 0% → 100% | 3d → none |
| CON-LEG101-PR-1440 | PO for Water Proofing | 2026-01-06 → 2026-01-03 A (-3d) | 2026-01-11 → 2026-01-03 A (-8d) | 0% → 100% | 20d → none |
| 10 | **Handicap ramp** | 2026-01-12 → 2026-04-02 (+80d) | 2027-03-30 → 2026-06-10 (-293d) |  |  |
| CON-LEG101-PR-2580 | PO for Handicap ramp | 2026-01-12 → 2026-04-02 A (+80d) | 2026-01-17 → 2026-04-02 A (+75d) | 0% → 100% | 20d → none |
| CON-LEG101-PR-2600 | Material Delivery for Handicap ramp | 2027-03-14 → 2026-06-10 A (-277d) | 2027-03-30 → 2026-06-10 A (-293d) | 0% → 100% | 14d → none |
| 9 | **Pavement Markings** | 2026-01-12 → 2026-04-02 (+80d) | 2027-04-04 → 2027-08-09 (+127d) |  |  |
| CON-LEG101-PR-1580 | PO for Pavement Markings | 2026-01-12 → 2026-04-02 A (+80d) | 2026-01-17 → 2026-04-02 A (+75d) | 0% → 100% | 20d → none |
| CON-LEG101-PR-1600 | Material Delivery for Pavement Markings | 2027-03-14 → 2027-07-18 (+126d) | 2027-03-30 → 2027-08-04 (+127d) |  | 14d → -69.2d |
| CON-LEG101-PR-2070 | Staging Time for Pavement Markings | 2027-03-31 → 2027-08-04 (+126d) | 2027-04-04 → 2027-08-09 (+127d) |  | 14d → -69.2d |
| 6 | **Bituminous Base & Wearing Course** | 2026-01-12 → 2025-12-20 (-23d) | 2027-04-06 → 2027-08-01 (+117d) |  |  |
| CON-LEG101-PR-1500 | PO for Bituminous Base & Wearing Course | 2026-01-12 → 2025-12-20 A (-23d) | 2026-01-17 → 2025-12-20 A (-28d) | 0% → 100% | 20d → none |
| CON-LEG101-PR-1510 | Material Delivery for Bituminous Base Course | 2026-06-15 → 2026-05-19 A (-27d) | 2026-07-08 → 2026-08-11 A (+34d) | 0% → 100% | 25d → none |
| CON-LEG101-PR-1530 | Material Delivery for Wearing Course | 2027-03-14 → 2026-09-29 A (-166d) | 2027-04-06 → 2027-08-01 (+117d) | 0% → 40% | 14d → -69.2d |
| 1 | **Long Lead Item** | 2025-12-30 → 2025-12-09 (-21d) | 2027-09-14 → 2027-09-07 (-7d) |  |  |
| 12 | **Sanitary Sewerage** | 2025-12-31 → 2025-12-17 (-14d) | 2026-05-16 → 2026-04-13 (-33d) |  |  |
| 1 | **GRP Pipes** | 2025-12-31 → 2025-12-17 (-14d) | 2026-05-05 → 2026-04-13 (-22d) |  |  |
| CON-LEG101-PR-1700 | PO for GRP Pipes for Sewer network | 2025-12-31 → 2025-12-17 A (-14d) | 2026-01-03 → 2025-12-17 A (-17d) | 0% → 100% | 0d → none |
| CON-LEG101-PR-1710 | Material Fabrication for GRP Pipes for Sewer network | 2026-01-04 → 2025-12-18 A (-17d) | 2026-04-06 → 2026-03-15 A (-22d) | 0% → 100% | 0d → none |
| CON-LEG101-PR-1720 | Material Delivery for GRP Pipes for Sewer network | 2026-04-07 → 2025-12-29 A (-99d) | 2026-04-23 → 2026-04-12 A (-11d) | 0% → 100% | 0d → none |
| CON-LEG101-PR-2560 | Staging Time for GRP Pipes for Sewer network | 2026-04-25 → 2025-12-30 A (-116d) | 2026-05-05 → 2026-04-13 A (-22d) | 0% → 100% | 0d → none |
| 2 | **Fiberglass Manholes** | 2026-01-08 → 2025-12-29 (-10d) | 2026-05-16 → 2026-04-04 (-42d) |  |  |
| CON-LEG101-PR-1730 | PO for Fiberglass Manholes for Sewer network | 2026-01-08 → 2025-12-29 A (-10d) | 2026-01-13 → 2025-12-30 A (-14d) | 0% → 100% | 8d → none |
| CON-LEG101-PR-1740 | Material Fabrication for Fiberglass Manholes for Sewer network | 2026-01-14 → 2025-12-31 A (-14d) | 2026-04-16 → 2026-01-28 A (-78d) | 0% → 100% | 8d → none |
| CON-LEG101-PR-1750 | Material Delivery for Fiberglass Manholes for Sewer network | 2026-04-18 → 2026-01-20 A (-88d) | 2026-05-04 → 2026-04-02 A (-32d) | 0% → 100% | 8d → none |
| CON-LEG101-PR-2570 | Staging Time for Fiberglass Manholes for Sewer network | 2026-05-05 → 2026-01-20 A (-105d) | 2026-05-16 → 2026-04-04 A (-42d) | 0% → 100% | 8d → none |
| 3 | **TSE Network** | 2026-01-06 → 2026-01-01 (-5d) | 2026-08-30 → 2026-04-23 (-129d) |  |  |
| 3 | **HDPE Pipe (PN 16)** | 2026-01-06 → 2026-01-01 (-5d) | 2026-06-08 → 2026-04-01 (-68d) |  |  |
| CON-LEG101-PR-1670 | PO for HDPE Pipe (PN 16) for TSE | 2026-01-06 → 2026-01-01 A (-5d) | 2026-01-11 → 2026-01-01 A (-10d) | 0% → 100% | 18d → none |
| CON-LEG101-PR-1680 | Material Fabrication for HDPE Pipe (PN 16) for TSE | 2026-01-12 → 2026-01-03 A (-9d) | 2026-04-14 → 2026-03-25 A (-20d) | 0% → 100% | 18d → none |
| CON-LEG101-PR-1690 | Material Delivery for HDPE Pipe (PN 16) for TSE | 2026-05-06 → 2026-01-04 A (-122d) | 2026-05-23 → 2026-03-31 A (-53d) | 0% → 100% | 0d → none |
| CON-LEG101-PR-2590 | Staging Time for HDPE Pipe (PN 16) for TSE | 2026-05-24 → 2026-01-05 A (-139d) | 2026-06-08 → 2026-04-01 A (-68d) | 0% → 100% | 0d → none |
| 1 | **Valves** | 2026-01-13 → 2026-01-28 (+15d) | 2026-07-07 → 2026-03-29 (-100d) |  |  |
| CON-LEG101-PR-1360 | PO for Valves for TSE | 2026-01-13 → 2026-01-28 A (+15d) | 2026-01-18 → 2026-01-28 A (+10d) | 0% → 100% | 19d → none |
| CON-LEG101-PR-1370 | Material Fabrication for Valves for TSE | 2026-01-19 → 2026-01-29 A (+10d) | 2026-05-09 → 2026-02-02 A (-96d) | 0% → 100% | 22d → none |
| CON-LEG101-PR-1380 | Material Delivery for Valves for TSE | 2026-06-09 → 2026-02-03 A (-126d) | 2026-06-25 → 2026-03-28 A (-89d) | 0% → 100% | 0d → none |
| CON-LEG101-PR-1970 | Staging Time for Valves for TSE | 2026-06-27 → 2026-02-04 A (-143d) | 2026-07-07 → 2026-03-29 A (-100d) | 0% → 100% | 0d → none |
| 2 | **Fire Hydrant** | 2026-01-12 → 2026-01-28 (+16d) | 2026-08-30 → 2026-04-23 (-129d) |  |  |
| CON-LEG101-PR-2440 | PO for Fire Hydrant | 2026-01-12 → 2026-01-28 A (+16d) | 2026-01-14 → 2026-01-28 A (+14d) | 0% → 100% | 22d → none |
| CON-LEG101-PR-2450 | Material Fabrication for Fire Hydrant | 2026-02-28 → 2026-01-29 A (-30d) | 2026-07-26 → 2026-02-02 A (-174d) | 0% → 100% | 20d → none |
| CON-LEG101-PR-2460 | Material Delivery for Fire Hydrant | 2026-07-27 → 2026-02-03 A (-174d) | 2026-08-18 → 2026-04-22 A (-118d) | 0% → 100% | 20d → none |
| CON-LEG101-PR-2470 | Staging Time for Fire Hydrant | 2026-08-19 → 2026-02-04 A (-196d) | 2026-08-30 → 2026-04-23 A (-129d) | 0% → 100% | 20d → none |
| 5 | **Stormwater Utilities** | 2025-12-30 → 2025-12-09 (-21d) | 2026-06-21 → 2026-04-13 (-69d) |  |  |
| 2 | **GRP Pipes** | 2025-12-31 → 2025-12-09 (-22d) | 2026-05-04 → 2026-04-13 (-21d) |  |  |
| CON-LEG101-PR-1790 | PO for GRP Pipes for Storm network | 2025-12-31 → 2025-12-09 A (-22d) | 2026-01-03 → 2025-12-09 A (-25d) | 0% → 100% | 10d → none |
| CON-LEG101-PR-1800 | Material Fabrication for GRP Pipes for Storm network | 2026-01-04 → 2025-12-10 A (-25d) | 2026-04-06 → 2026-03-12 A (-25d) | 0% → 100% | 10d → none |
| CON-LEG101-PR-1810 | Material Delivery for GRP Pipes for Storm network | 2026-04-07 → 2025-12-16 A (-112d) | 2026-04-22 → 2026-04-12 A (-10d) | 0% → 100% | 10d → none |
| CON-LEG101-PR-2100 | Staging Time for GRP Pipes for Storm network | 2026-04-23 → 2025-12-20 A (-124d) | 2026-05-04 → 2026-04-13 A (-21d) | 0% → 100% | 10d → none |
| 1 | **UPVC Pipes** | 2025-12-30 → 2026-01-28 (+29d) | 2026-05-04 → 2026-04-02 (-32d) |  |  |
| CON-LEG101-PR-1760 | PO for UPVC Pipes | 2025-12-30 → 2026-01-28 A (+29d) | 2026-01-01 → 2026-01-28 A (+27d) | 0% → 100% | 10d → none |
| CON-LEG101-PR-1770 | Material Fabrication for UPVC Pipes | 2026-01-03 → 2026-01-29 A (+26d) | 2026-04-05 → 2026-03-29 A (-7d) | 0% → 100% | 10d → none |
| CON-LEG101-PR-1780 | Material Delivery for UPVC Pipes | 2026-04-06 → 2026-01-31 A (-65d) | 2026-04-22 → 2026-04-01 A (-21d) | 0% → 100% | 10d → none |
| CON-LEG101-PR-2110 | Staging Time for UPVC Pipes | 2026-04-23 → 2026-02-01 A (-81d) | 2026-05-04 → 2026-04-02 A (-32d) | 0% → 100% | 10d → none |
| 6 | **Inlet Manholes** | 2026-01-05 → 2025-12-17 (-19d) | 2026-05-06 → 2026-04-04 (-32d) |  |  |
| CON-LEG101-PR-1820 | PO for Inlet Manholes for Storm network | 2026-01-05 → 2025-12-17 A (-19d) | 2026-01-10 → 2025-12-17 A (-24d) | 0% → 100% | 13d → none |
| CON-LEG101-PR-1830 | Material Fabrication for Inlet Manholes for Storm network | 2026-01-11 → 2025-12-18 A (-24d) | 2026-04-07 → 2026-01-28 A (-69d) | 0% → 100% | 13d → none |
| CON-LEG101-PR-1840 | Material Delivery for Inlet Manholes for Storm network | 2026-04-08 → 2025-12-28 A (-101d) | 2026-04-25 → 2026-04-02 A (-23d) | 0% → 100% | 16d → none |
| CON-LEG101-PR-1980 | Staging Time for Inlet Manholes for Storm network | 2026-04-26 → 2025-12-30 A (-117d) | 2026-05-06 → 2026-04-04 A (-32d) | 0% → 100% | 16d → none |
| 7 | **Concrete chambers** | 2026-01-13 → 2025-12-23 (-21d) | 2026-06-21 → 2026-04-09 (-73d) |  |  |
| CON-LEG101-PR-1850 | PO for Concrete chambers | 2026-01-13 → 2025-12-23 A (-21d) | 2026-01-15 → 2025-12-23 A (-23d) | 0% → 100% | 21d → none |
| CON-LEG101-PR-1860 | Material Fabrication for Concrete chambers | 2026-01-28 → 2025-12-27 A (-32d) | 2026-04-30 → 2026-04-02 A (-28d) | 0% → 100% | 13d → none |
| CON-LEG101-PR-1870 | Material Delivery for Concrete chambers | 2026-05-02 → 2026-01-31 A (-91d) | 2026-05-24 → 2026-04-08 A (-46d) | 0% → 100% | 13d → none |
| CON-LEG101-PR-1990 | Staging Time for Concrete chambers | 2026-05-25 → 2026-02-01 A (-113d) | 2026-06-21 → 2026-04-09 A (-73d) | 0% → 100% | 13d → none |
| 2 | **Public Water Utility Distribution** | 2026-01-07 → 2026-01-01 (-6d) | 2026-08-05 → 2026-04-04 (-123d) |  |  |
| 2 | **HDPE Pipe (PN 16)** | 2026-01-07 → 2026-01-01 (-6d) | 2026-05-12 → 2026-04-04 (-38d) |  |  |
| CON-LEG101-PR-1640 | PO for HDPE Pipe (PN 16) for Ptable Water | 2026-01-07 → 2026-01-01 A (-6d) | 2026-01-10 → 2026-01-01 A (-9d) | 0% → 100% | 17d → none |
| CON-LEG101-PR-1650 | Material Fabrication for HDPE Pipe (PN 16) for Ptable Water | 2026-01-11 → 2026-01-03 A (-8d) | 2026-04-13 → 2026-03-25 A (-19d) | 0% → 100% | 17d → none |
| CON-LEG101-PR-1660 | Material Delivery for HDPE Pipe (PN 16) for Ptable Water | 2026-04-14 → 2026-01-04 A (-100d) | 2026-04-30 → 2026-04-02 A (-28d) | 0% → 100% | 17d → none |
| CON-LEG101-PR-4010 | Staging Time for HDPE Pipe (PN 16) for Ptable Water | 2026-05-02 → 2026-01-05 A (-117d) | 2026-05-12 → 2026-04-04 A (-38d) | 0% → 100% | 17d → none |
| 1 | **Valves** | 2026-01-12 → 2026-01-28 (+16d) | 2026-08-05 → 2026-03-29 (-129d) |  |  |
| CON-LEG101-PR-1330 | PO for Valves for Ptable Water | 2026-01-12 → 2026-01-28 A (+16d) | 2026-01-17 → 2026-01-28 A (+11d) | 0% → 100% | 20d → none |

| ID | Task | Start | Finish | Complete | Total float |
| --- | --- | --- | --- | --- | --- |
| CON-LEG101-PR-1340 | Material Fabrication for Valves for Ptable Water | 2026-01-28 → 2026-01-29 A (+1d) | 2026-05-18 → 2026-02-02 A (-105d) | 0% → 100% | 18d → none |
| CON-LEG101-PR-1350 | Material Delivery for Valves for Ptable Water | 2026-07-08 → 2026-02-03 A (-155d) | 2026-07-25 → 2026-03-28 A (-119d) | 0% → 100% | 0d → none |
| CON-LEG101-PR-1960 | Staging Time for Valves for Ptable Water | 2026-07-26 → 2026-02-04 A (-172d) | 2026-08-05 → 2026-03-29 A (-129d) | 0% → 100% | 0d → none |
| 10 | **Fence & Gates** | 2026-01-01 → 2025-12-27 (-5d) | 2026-08-20 → 2027-01-09 (+142d) |  |  |
| 1 | **Metal Fence** | 2026-01-01 → 2025-12-27 (-5d) | 2026-05-09 → 2026-07-30 (+82d) |  |  |
| CON-LEG101-PR-2000 | PO for Metal Fence | 2026-01-01 → 2025-12-27 A (-5d) | 2026-01-06 → 2025-12-27 A (-10d) | 0% → 100% | 0d → none |
| CON-LEG101-PR-2010 | Material Fabrication for Metal Fence | 2026-01-07 → 2025-12-28 A (-10d) | 2026-04-09 → 2026-06-08 A (+60d) | 0% → 100% | 0d → none |
| CON-LEG101-PR-2020 | Material Delivery for Metal Fence | 2026-04-11 → 2026-03-10 A (-32d) | 2026-04-27 → 2026-07-28 A (+92d) | 0% → 100% | 0d → none |
| CON-LEG101-PR-2080 | Staging Time for Metal Fence | 2026-04-28 → 2026-03-11 A (-48d) | 2026-05-09 → 2026-07-30 A (+82d) | 0% → 100% | 10d → none |
| 2 | **Gates** | 2026-01-05 → 2025-12-27 (-9d) | 2026-08-20 → 2027-01-09 (+142d) |  |  |
| CON-LEG101-PR-2030 | PO for Gates | 2026-01-05 → 2025-12-27 A (-9d) | 2026-01-10 → 2025-12-27 A (-14d) | 0% → 100% | 21d → none |
| CON-LEG101-PR-2040 | Material Fabrication for Gates | 2026-04-28 → 2025-12-28 A (-121d) | 2026-07-22 → 2026-12-10 (+141d) | 0% → 20% | 13d → -8.3d |
| CON-LEG101-PR-2050 | Material Delivery for Gates | 2026-07-23 → 2026-12-12 (+142d) | 2026-08-09 → 2026-12-28 (+141d) |  | 13d → -8.3d |
| CON-LEG101-PR-2090 | Staging Time for Gates | 2026-08-10 → 2026-12-29 (+141d) | 2026-08-20 → 2027-01-09 (+142d) |  | 13d → -8.3d |
| 3 | **Paint On Cement Plaster** | 2026-01-11 → 2026-01-13 (+2d) | 2026-06-10 → 2026-04-16 (-55d) |  |  |
| CON-LEG101-PR-2610 | PO for Paint On Cement Plaster | 2026-01-11 → 2026-01-13 A (+2d) | 2026-01-15 → 2026-01-13 A (-2d) | 0% → 100% | 21d → none |
| CON-LEG101-PR-2620 | Material Fabrication for Paint On Cement Plaster | 2026-04-11 → 2026-04-09 A (-2d) | 2026-05-14 → 2026-04-12 A (-32d) | 0% → 100% | 0d → none |
| CON-LEG101-PR-2630 | Material Delivery for Paint On Cement Plaster | 2026-05-16 → 2026-04-15 A (-31d) | 2026-05-26 → 2026-04-15 A (-41d) | 0% → 100% | 0d → none |
| CON-LEG101-PR-2940 | Staging Time for Paint On Cement Plaster | 2026-06-01 → 2026-04-16 A (-46d) | 2026-06-10 → 2026-04-16 A (-55d) | 0% → 100% | 0d → none |
| 7 | **Telecommunications** | 2026-01-04 → 2026-02-08 (+35d) | 2026-12-02 → 2026-04-26 (-220d) |  |  |
| 2 | **Pipe for the Duct** | 2026-01-04 → 2026-02-15 (+42d) | 2026-10-08 → 2026-03-30 (-192d) |  |  |
| CON-LEG101-PR-3160 | PO for Pipe for Duct | 2026-01-04 → 2026-02-15 A (+42d) | 2026-01-08 → 2026-02-15 A (+38d) | 0% → 100% | 27d → none |
| CON-LEG101-PR-3170 | Material Fabrication for Pipe for Duct | 2026-07-01 → 2026-02-17 A (-134d) | 2026-09-02 → 2026-03-05 A (-181d) | 0% → 100% | 9d → none |
| CON-LEG101-PR-3180 | Material Delivery for Pipe for Duct | 2026-09-03 → 2026-02-21 A (-194d) | 2026-09-20 → 2026-03-30 A (-174d) | 0% → 100% | 18d → none |
| CON-LEG101-PR-4020 | Staging Time for Pipe for Duct | 2026-09-21 → 2026-02-22 A (-211d) | 2026-10-08 → 2026-03-30 A (-192d) | 0% → 100% | 18d → none |
| 1 | **Low Voltage Cables** | 2026-01-11 → 2026-02-08 (+28d) | 2026-11-24 → 2026-04-16 (-222d) |  |  |
| CON-LEG101-PR-3190 | PO for Low Voltage Cables | 2026-01-11 → 2026-02-08 A (+28d) | 2026-01-15 → 2026-02-08 A (+24d) | 0% → 100% | 21d → none |
| CON-LEG101-PR-3210 | Material Fabrication for Low Voltage Cables | 2026-07-01 → 2026-02-10 A (-141d) | 2026-09-02 → 2026-04-09 A (-146d) | 0% → 100% | 9d → none |
| CON-LEG101-PR-3230 | Material Delivery for Low Voltage Cables | 2026-10-10 → 2026-03-14 A (-210d) | 2026-11-01 → 2026-04-15 A (-200d) | 0% → 100% | 18d → none |
| CON-LEG101-PR-3250 | Staging Time for Low Voltage Cables | 2026-11-02 → 2026-03-15 A (-232d) | 2026-11-24 → 2026-04-16 A (-222d) | 0% → 100% | 18d → none |
| 4 | **Manhole** | 2026-01-13 → 2026-02-18 (+36d) | 2026-12-02 → 2026-04-26 (-220d) |  |  |
| CON-LEG101-PR-3200 | PO for Manhole | 2026-01-13 → 2026-02-18 A (+36d) | 2026-01-18 → 2026-02-19 A (+32d) | 0% → 100% | 19d → none |
| CON-LEG101-PR-3220 | Material Fabrication for Manhole | 2026-07-01 → 2026-02-21 A (-130d) | 2026-09-27 → 2026-04-20 A (-160d) | 0% → 100% | 9d → none |
| CON-LEG101-PR-3240 | Material Delivery for Manhole | 2026-11-02 → 2026-03-15 A (-232d) | 2026-11-18 → 2026-04-25 A (-207d) | 0% → 100% | 18d → none |
| CON-LEG101-PR-3260 | Staging Time for Manhole | 2026-11-19 → 2026-03-16 A (-248d) | 2026-12-02 → 2026-04-26 A (-220d) | 0% → 100% | 18d → none |
| 9 | **Road Works - Civil** | 2026-01-12 → 2026-04-07 (+85d) | 2027-01-04 → 2026-07-04 (-184d) |  |  |
| 10 | **Traffic Signs** | 2026-01-12 → 2026-04-07 (+85d) | 2027-01-04 → 2026-07-04 (-184d) |  |  |
| CON-LEG101-PR-1610 | PO for Traffic Signs | 2026-01-12 → 2026-04-07 A (+85d) | 2026-01-17 → 2026-04-08 A (+81d) | 0% → 100% | 20d → none |
| CON-LEG101-PR-1620 | Material Fabrication for Traffic Signs | 2026-01-28 → 2026-04-09 A (+71d) | 2026-05-18 → 2026-07-01 A (+44d) | 0% → 100% | 20d → none |
| CON-LEG101-PR-1630 | Material Delivery for Traffic Signs | 2026-12-07 → 2026-06-13 A (-177d) | 2026-12-23 → 2026-07-02 A (-174d) | 0% → 100% | 16d → none |
| CON-LEG101-PR-2060 | Staging Time for Traffic Signs | 2026-12-24 → 2026-06-14 A (-193d) | 2027-01-04 → 2026-07-04 A (-184d) | 0% → 100% | 16d → none |
| 1 | **Electrical Network** | 2026-01-04 → 2026-02-08 (+35d) | 2027-02-02 → 2027-05-29 (+116d) |  |  |
| 11 | **Pipe for the Duct** | 2026-01-04 → 2026-02-15 (+42d) | 2026-06-07 → 2026-03-31 (-68d) |  |  |
| CON-LEG101-PR-1260 | PO for Pipe for Duct | 2026-01-04 → 2026-02-15 A (+42d) | 2026-01-06 → 2026-02-16 A (+41d) | 0% → 100% | 8d → none |
| CON-LEG101-PR-1290 | Material Fabrication for Pipe for Duct | 2026-01-07 → 2026-02-16 A (+40d) | 2026-04-27 → 2026-03-24 A (-34d) | 0% → 100% | 8d → none |
| CON-LEG101-PR-1320 | Material Delivery for Pipe for Duct | 2026-05-05 → 2026-02-25 A (-69d) | 2026-05-21 → 2026-03-28 A (-54d) | 0% → 100% | 15d → none |
| CON-LEG101-PR-1400 | Staging Time for Valves for Pipe for Duct | 2026-05-23 → 2026-02-26 A (-86d) | 2026-06-07 → 2026-03-31 A (-68d) | 0% → 100% | 15d → none |
| 12 | **Cable Termination & Joints** | 2026-01-11 → 2026-09-02 (+234d) | 2026-06-24 → 2027-03-09 (+258d) |  |  |
| CON-LEG101-PR-1240 | PO for Cable Termination & Joints | 2026-01-11 → 2026-09-02 A (+234d) | 2026-01-15 → 2026-10-12 (+270d) |  | 21d → -113d |
| CON-LEG101-PR-1270 | Material Fabrication for Cable Termination & Joints | 2026-01-28 → 2026-10-13 (+258d) | 2026-05-18 → 2027-01-25 (+252d) |  | 20d → -113d |
| CON-LEG101-PR-1300 | Material Delivery for Cable Termination & Joints | 2026-05-23 → 2027-01-26 (+248d) | 2026-06-13 → 2027-02-16 (+248d) |  | 17d → -113d |
| CON-LEG101-PR-1450 | Stagging Time for Cable Termination & Joints | 2026-06-14 → 2027-02-27 (+258d) | 2026-06-24 → 2027-03-09 (+258d) |  | 17d → -120d |
| 13 | **Earthing System** | 2026-01-11 → 2026-02-08 (+28d) | 2026-08-09 → 2026-05-10 (-91d) |  |  |
| CON-LEG101-PR-1250 | PO for Earthing System | 2026-01-11 → 2026-02-08 A (+28d) | 2026-01-15 → 2026-02-09 A (+25d) | 0% → 100% | 21d → none |
| CON-LEG101-PR-1280 | Material Fabrication for Earthing System | 2026-04-28 → 2026-02-27 A (-60d) | 2026-07-11 → 2026-03-05 A (-128d) | 0% → 100% | 8d → none |
| CON-LEG101-PR-1310 | Material Delivery for Earthing System | 2026-07-12 → 2026-05-02 A (-71d) | 2026-07-28 → 2026-05-07 A (-82d) | 0% → 100% | 8d → none |
| CON-LEG101-PR-1480 | Stagging Time for Earthing System | 2026-07-29 → 2026-05-09 A (-81d) | 2026-08-09 → 2026-05-10 A (-91d) | 0% → 100% | 8d → none |
| 1 | **Medium Voltage Cable** | 2026-01-13 → 2026-09-02 (+232d) | 2026-06-01 → 2027-02-25 (+269d) |  |  |
| CON-LEG101-PR-1000 | PO for Medium Voltage Cable | 2026-01-13 → 2026-09-02 A (+232d) | 2026-01-18 → 2026-10-12 (+267d) |  | 19d → -128d |
| CON-LEG101-PR-1080 | Material Fabrication for Medium Voltage Cable | 2026-02-01 → 2026-11-02 (+274d) | 2026-04-16 → 2027-01-10 (+269d) |  | 9d → -145d |
| CON-LEG101-PR-1160 | Material Delivery for Medium Voltage Cable | 2026-04-23 → 2027-01-17 (+269d) | 2026-05-10 → 2027-02-02 (+268d) |  | 13d → -145d |
| CON-LEG101-PR-1880 | Staging Time for Medium Voltage Cable | 2026-05-11 → 2027-02-03 (+268d) | 2026-06-01 → 2027-02-25 (+269d) |  | 13d → -145d |
| 4 | **Street Lighting Sub-station** | 2026-01-11 → 2026-04-05 (+84d) | 2026-09-07 → 2027-04-25 (+230d) |  |  |
| CON-LEG101-PR-1010 | PO for Street Lighting Sub-station | 2026-01-11 → 2026-04-05 A (+84d) | 2026-01-15 → 2026-04-05 A (+80d) | 0% → 100% | 21d → none |
| CON-LEG101-PR-1090 | Material Fabrication for Street Lighting Sub-station | 2026-04-18 → 2027-01-11 (+268d) | 2026-06-30 → 2027-03-27 (+270d) |  | 12d → -94.3d |
| CON-LEG101-PR-1170 | Material Delivery for Street Lighting Sub-station | 2026-08-10 → 2027-03-28 (+230d) | 2026-08-26 → 2027-04-13 (+230d) |  | 8d → -94.3d |
| CON-LEG101-PR-1890 | Staging Time for Street Lighting Sub-station | 2026-08-27 → 2027-04-14 (+230d) | 2026-09-07 → 2027-04-25 (+230d) |  | 13d → -94.3d |
| 5 | **Low Voltage Cables** | 2026-01-07 → 2026-02-08 (+32d) | 2026-09-26 → 2026-04-16 (-163d) |  |  |
| CON-LEG101-PR-1020 | PO for Low Voltage Cables | 2026-01-07 → 2026-02-08 A (+32d) | 2026-01-12 → 2026-02-09 A (+28d) | 0% → 100% | 24d → none |
| CON-LEG101-PR-1100 | Material Fabrication for Low Voltage Cables | 2026-04-18 → 2026-02-11 A (-66d) | 2026-06-30 → 2026-04-09 A (-82d) | 0% → 100% | 9d → none |

| ID | Task | Start | Finish | Complete | Total float | Predecessors |
| --- | --- | --- | --- | --- | --- | --- |
| CON-LEG101-PR-1180 | Material Delivery for Low Voltage Cables | 2026-08-27 → 2026-03-14 A (-166d) | 2026-09-13 → 2026-04-15 A (-151d) | 0% → 100% | 8d → none |  |
| CON-LEG101-PR-1900 | Staging Time for Low Voltage Cables | 2026-09-14 → 2026-03-15 A (-183d) | 2026-09-26 → 2026-04-16 A (-163d) | 0% → 100% | 8d → none |  |
| 2 | **Ring Main Unit** | 2026-01-11 → 2026-10-12 (+274d) | 2026-10-25 → 2027-05-29 (+216d) |  |  |  |
| CON-LEG101-PR-2480 | PO for Ring Main Unit | 2026-01-11 → 2026-10-12 (+274d) | 2026-01-15 → 2026-10-18 (+276d) |  | 21d → -37.2d |  |
| CON-LEG101-PR-2490 | Material Fabrication for Ring Main Unit | 2026-07-01 → 2026-12-30 (+182d) | 2026-09-20 → 2027-03-27 (+188d) |  | 12d → -69.3d | CON-LEG101-PR-1090, CON-LEG101-PR-2480 → CON-LEG101-PR-1090 FF, CON-LEG101-PR-2480 |
| CON-LEG101-PR-2500 | Material Delivery for Ring Main Unit | 2026-09-27 → 2027-04-26 (+211d) | 2026-10-13 → 2027-05-12 (+211d) |  | 8d → -94.3d |  |
| CON-LEG101-PR-2510 | Staging Time for Ring Main Unit | 2026-10-14 → 2027-05-13 (+211d) | 2026-10-25 → 2027-05-29 (+216d) |  | 8d → -94.3d |  |
| 6 | **Lighting poles** | 2026-01-13 → 2026-02-16 (+34d) | 2026-09-10 → 2026-04-13 (-150d) |  |  |  |
| CON-LEG101-PR-1030 | PO for Lighting poles | 2026-01-13 → 2026-02-16 A (+34d) | 2026-01-17 → 2026-02-16 A (+30d) | 0% → 100% | 20d → none |  |
| CON-LEG101-PR-1110 | Material Fabrication for Lighting poles | 2026-05-11 → 2026-02-17 A (-83d) | 2026-08-10 → 2026-03-31 A (-132d) | 0% → 100% | 20d → none |  |
| CON-LEG101-PR-1190 | Material Delivery for Lighting poles | 2026-08-11 → 2026-04-01 A (-132d) | 2026-08-27 → 2026-04-12 A (-137d) | 0% → 100% | 20d → none |  |
| CON-LEG101-PR-1910 | Staging Time for Lighting poles | 2026-08-29 → 2026-04-02 A (-149d) | 2026-09-10 → 2026-04-13 A (-150d) | 0% → 100% | 20d → none |  |
| 3 | **Lighting panels** | 2026-01-11 → 2026-04-05 (+84d) | 2026-11-05 → 2026-08-12 (-85d) |  |  |  |
| CON-LEG101-PR-2520 | PO for Lighting panels | 2026-01-11 → 2026-04-05 A (+84d) | 2026-01-17 → 2026-04-05 A (+78d) | 0% → 100% | 20d → none |  |
| CON-LEG101-PR-2530 | Material Fabrication for Lighting panels | 2026-07-01 → 2026-05-02 A (-60d) | 2026-09-27 → 2026-08-06 A (-52d) | 0% → 100% | 16d → none |  |
| CON-LEG101-PR-2540 | Material Delivery for Lighting panels | 2026-09-28 → 2026-08-08 A (-51d) | 2026-10-14 → 2026-08-10 A (-65d) | 0% → 100% | 17d → none |  |
| CON-LEG101-PR-2550 | Staging Time for Lighting panels | 2026-10-26 → 2026-08-12 A (-75d) | 2026-11-05 → 2026-08-12 A (-85d) | 0% → 100% | 8d → none | CON-LEG101-PR-2510, CON-LEG101-PR-2540 → CON-LEG101-PR-2510 FF, CON-LEG101-PR-2540 |
| 7 | **Street Lighting Luminaire** | 2026-01-13 → 2026-02-16 (+34d) | 2026-09-10 → 2026-04-13 (-150d) |  |  |  |
| CON-LEG101-PR-1040 | PO for Street Lighting Luminaire | 2026-01-13 → 2026-02-16 A (+34d) | 2026-01-17 → 2026-02-16 A (+30d) | 0% → 100% | 20d → none |  |
| CON-LEG101-PR-1120 | Material Fabrication for Street Lighting Luminaire | 2026-05-11 → 2026-02-17 A (-83d) | 2026-08-10 → 2026-03-31 A (-132d) | 0% → 100% | 20d → none |  |
| CON-LEG101-PR-1200 | Material Delivery for Street Lighting Luminaire | 2026-08-11 → 2026-04-01 A (-132d) | 2026-08-27 → 2026-04-12 A (-137d) | 0% → 100% | 20d → none |  |
| CON-LEG101-PR-1920 | Staging Time for Street Lighting Luminaire | 2026-08-29 → 2026-04-02 A (-149d) | 2026-09-10 → 2026-04-13 A (-150d) | 0% → 100% | 20d → none |  |
| 8 | **System for KWHM** | 2026-01-11 → 2026-07-16 (+186d) | 2027-02-02 → 2026-08-12 (-174d) |  |  |  |
| CON-LEG101-PR-1050 | PO for System for KWHM | 2026-01-11 → 2026-07-16 A (+186d) | 2026-01-17 → 2026-07-16 A (+180d) | 0% → 100% | 20d → none |  |
| CON-LEG101-PR-1130 | Material Fabrication for System for KWHM | 2026-09-21 → 2026-07-18 A (-65d) | 2027-01-04 → 2026-08-06 A (-151d) | 0% → 100% | 16d → none |  |
| CON-LEG101-PR-1210 | Material Delivery for System for KWHM | 2027-01-05 → 2026-08-08 A (-150d) | 2027-01-21 → 2026-08-10 A (-164d) | 0% → 100% | 16d → none |  |
| CON-LEG101-PR-1930 | Staging Time for System for KWHM | 2027-01-23 → 2026-08-11 A (-165d) | 2027-02-02 → 2026-08-12 A (-174d) | 0% → 100% | 16d → none |  |
| 9 | **Feeder Piller** | 2026-01-11 → 2026-07-16 (+186d) | 2026-11-01 → 2026-08-12 (-81d) |  |  |  |
| CON-LEG101-PR-1060 | PO for Feeder Piller | 2026-01-11 → 2026-07-16 A (+186d) | 2026-01-17 → 2026-07-16 A (+180d) | 0% → 100% | 20d → none |  |
| CON-LEG101-PR-1140 | Material Fabrication for Feeder Piller | 2026-07-01 → 2026-07-18 A (+17d) | 2026-09-27 → 2026-08-06 A (-52d) | 0% → 100% | 16d → none |  |
| CON-LEG101-PR-1220 | Material Delivery for Feeder Piller | 2026-09-28 → 2026-08-08 A (-51d) | 2026-10-14 → 2026-08-10 A (-65d) | 0% → 100% | 20d → none |  |
| CON-LEG101-PR-1940 | Staging Time for Feeder Piller | 2026-10-15 → 2026-08-11 A (-65d) | 2026-11-01 → 2026-08-12 A (-81d) | 0% → 100% | 20d → none |  |
| 10 | **Street Lighting Panels** | 2026-01-11 → 2026-07-16 (+186d) | 2026-10-26 → 2026-08-12 (-75d) |  |  |  |
| CON-LEG101-PR-1070 | PO for Street Lighting Panels | 2026-01-11 → 2026-07-16 A (+186d) | 2026-01-17 → 2026-07-16 A (+180d) | 0% → 100% | 20d → none |  |
| CON-LEG101-PR-1150 | Material Fabrication for Street Lighting Panels | 2026-07-01 → 2026-07-18 A (+17d) | 2026-09-27 → 2026-08-06 A (-52d) | 0% → 100% | 16d → none |  |
| CON-LEG101-PR-1230 | Material Delivery for Street Lighting Panels | 2026-09-28 → 2026-08-08 A (-51d) | 2026-10-14 → 2026-08-10 A (-65d) | 0% → 100% | 16d → none |  |
| CON-LEG101-PR-1950 | Staging Time for Street Lighting Panels | 2026-10-15 → 2026-08-11 A (-65d) | 2026-10-26 → 2026-08-12 A (-75d) | 0% → 100% | 16d → none |  |
| 8 | **CCTV feeding system and GSM** | 2026-01-11 → 2026-03-30 (+78d) | 2027-03-11 → 2026-06-10 (-274d) |  |  |  |
| 15 | **LED Screen 43" (24/7 operation) with Ethernet decoders** | 2026-01-13 → 2026-03-30 (+76d) | 2026-12-12 → 2026-06-10 (-185d) |  |  |  |
| CON-LEG101-PR-3270 | PO for LED Screen 43" (24/7 operation) with Ethernet decoders | 2026-01-13 → 2026-03-30 A (+76d) | 2026-01-18 → 2026-03-30 A (+71d) | 0% → 100% | 19d → none |  |
| CON-LEG101-PR-3280 | Material Fabrication for LED Screen 43" (24/7 operation) with Ethernet decoders | 2026-09-03 → 2026-04-04 A (-152d) | 2026-11-12 → 2026-06-04 A (-161d) | 0% → 100% | 10d → none |  |
| CON-LEG101-PR-3290 | Material Delivery for LED Screen 43" (24/7 operation) with Ethernet decoders | 2026-11-14 → 2026-06-10 A (-157d) | 2026-11-30 → 2026-06-10 A (-173d) | 0% → 100% | 10d → none |  |
| CON-LEG101-PR-3950 | Staging Time for LED Screen 43" (24/7 operation) with Ethernet decoders | 2026-12-01 → 2026-06-10 A (-174d) | 2026-12-12 → 2026-06-10 A (-185d) | 0% → 100% | 10d → none |  |
| 16 | **Network Video Recorder 4k 64 Channel** | 2026-01-17 → 2026-03-30 (+72d) | 2027-02-25 → 2026-06-10 (-260d) |  |  |  |
| CON-LEG101-PR-3740 | PO for Network Video Recorder 4k 64 Channel | 2026-01-17 → 2026-03-30 A (+72d) | 2026-01-18 → 2026-03-30 A (+71d) | 0% → 100% | 19d → none |  |
| CON-LEG101-PR-3750 | Material Fabrication for Network Video Recorder 4k 64 Channel | 2026-11-14 → 2026-04-04 A (-224d) | 2027-01-27 → 2026-06-04 A (-237d) | 0% → 100% | 19d → none |  |
| CON-LEG101-PR-3760 | Material Delivery for Network Video Recorder 4k 64 Channel | 2027-01-28 → 2026-06-10 A (-232d) | 2027-02-08 → 2026-06-10 A (-243d) | 0% → 100% | 30d → none |  |
| CON-LEG101-PR-3960 | Staging Time for Network Video Recorder 4k 64 Channel | 2027-02-14 → 2026-06-10 A (-249d) | 2027-02-25 → 2026-06-10 A (-260d) | 0% → 100% | 30d → none |  |
| 17 | **Keypad** | 2026-01-17 → 2026-03-30 (+72d) | 2027-03-11 → 2026-06-10 (-274d) |  |  |  |
| CON-LEG101-PR-3770 | PO for Keypad | 2026-01-17 → 2026-03-30 A (+72d) | 2026-01-18 → 2026-03-30 A (+71d) | 0% → 100% | 19d → none |  |
| CON-LEG101-PR-3780 | Material Fabrication for Keypad | 2026-11-14 → 2026-04-04 A (-224d) | 2027-02-08 → 2026-06-04 A (-249d) | 0% → 100% | 19d → none |  |
| CON-LEG101-PR-3790 | Material Delivery for Keypad | 2027-02-14 → 2026-06-10 A (-249d) | 2027-02-28 → 2026-06-10 A (-263d) | 0% → 100% | 19d → none |  |
| CON-LEG101-PR-3970 | Staging Time for Keypad | 2027-03-01 → 2026-06-10 A (-264d) | 2027-03-11 → 2026-06-10 A (-274d) | 0% → 100% | 19d → none |  |
| 1 | **Fiber Optic Patch Panel 12 port** | 2026-01-11 → 2026-03-30 (+78d) | 2026-11-01 → 2026-06-10 (-144d) |  |  |  |
| CON-LEG101-PR-3300 | PO for Fiber Optic Patch Panel 12 port | 2026-01-11 → 2026-03-30 A (+78d) | 2026-01-15 → 2026-03-30 A (+74d) | 0% → 100% | 21d → none |  |
| CON-LEG101-PR-3320 | Material Fabrication for Fiber Optic Patch Panel 12 port | 2026-07-01 → 2026-04-04 A (-88d) | 2026-09-27 → 2026-06-04 A (-115d) | 0% → 100% | 9d → none |  |
| CON-LEG101-PR-3340 | Material Delivery for Fiber Optic Patch Panel 12 port | 2026-09-28 → 2026-06-10 A (-110d) | 2026-10-14 → 2026-06-10 A (-126d) | 0% → 100% | 39d → none |  |
| CON-LEG101-PR-3360 | Staging Time for Fiber Optic Patch Panel 12 port | 2026-10-15 → 2026-06-10 A (-127d) | 2026-11-01 → 2026-06-10 A (-144d) | 0% → 100% | 39d → none |  |
| 4 | **Modular Industrial Switches for main pole** | 2026-01-14 → 2026-03-30 (+75d) | 2026-12-17 → 2026-06-10 (-190d) |  |  |  |
| CON-LEG101-PR-3310 | PO for Modular Industrial Switches for main pole | 2026-01-14 → 2026-03-30 A (+75d) | 2026-01-19 → 2026-03-30 A (+70d) | 0% → 100% | 18d → none |  |
| CON-LEG101-PR-3330 | Material Fabrication for Modular Industrial Switches for main pole | 2026-07-01 → 2026-04-04 A (-88d) | 2026-09-27 → 2026-06-04 A (-115d) | 0% → 100% | 9d → none |  |
| CON-LEG101-PR-3350 | Material Delivery for Modular Industrial Switches for main pole | 2026-11-02 → 2026-06-10 A (-145d) | 2026-11-18 → 2026-06-10 A (-161d) | 0% → 100% | 39d → none |  |
| CON-LEG101-PR-3370 | Staging Time for Modular Industrial Switches for main pole | 2026-12-01 → 2026-06-10 A (-174d) | 2026-12-17 → 2026-06-10 A (-190d) | 0% → 100% | 29d → none |  |
| 2 | **8POE ports Industrial Switches for remote poles** | 2026-01-13 → 2026-03-30 (+76d) | 2026-11-07 → 2026-05-05 (-186d) |  |  |  |
| CON-LEG101-PR-3380 | PO for 8POE ports Industrial Switches for remote poles | 2026-01-13 → 2026-03-30 A (+76d) | 2026-01-18 → 2026-03-30 A (+71d) | 0% → 100% | 19d → none |  |
| CON-LEG101-PR-3390 | Material Fabrication for 8POE ports Industrial Switches for remote poles | 2026-07-01 → 2026-04-04 A (-88d) | 2026-09-20 → 2026-04-30 A (-143d) | 0% → 100% | 9d → none |  |
| CON-LEG101-PR-3400 | Material Delivery for 8POE ports Industrial Switches for remote poles | 2026-09-21 → 2026-05-02 A (-142d) | 2026-10-14 → 2026-05-04 A (-163d) | 0% → 100% | 17d → none |  |
| CON-LEG101-PR-3410 | Staging Time for 8POE ports Industrial Switches for remote poles | 2026-10-15 → 2026-05-05 A (-163d) | 2026-11-07 → 2026-05-05 A (-186d) | 0% → 100% | 17d → none |  |
| 3 | **Core Switch** | 2026-01-13 → 2026-03-30 (+76d) | 2027-01-16 → 2026-05-05 (-256d) |  |  |  |
| CON-LEG101-PR-3420 | PO for Core Switch | 2026-01-13 → 2026-03-30 A (+76d) | 2026-01-18 → 2026-03-30 A (+71d) | 0% → 100% | 19d → none |  |

| ID | Task | Start | Finish | Complete | Total float |
| --- | --- | --- | --- | --- | --- |
| CON-LEG101-PR-3430 | Material Fabrication for Core Switch | 2026-09-21 → 2026-04-04 A (-170d) | 2026-12-17 → 2026-04-30 A (-231d) | 0% → 100% | 29d → none |
| CON-LEG101-PR-3440 | Material Delivery for Core Switch | 2026-12-19 → 2026-05-02 A (-231d) | 2027-01-04 → 2026-05-04 A (-245d) | 0% → 100% | 29d → none |
| CON-LEG101-PR-3450 | Staging Time for Core Switch | 2027-01-05 → 2026-05-05 A (-245d) | 2027-01-16 → 2026-05-05 A (-256d) | 0% → 100% | 29d → none |
| 5 | **Access Switch 48 port** | 2026-01-13 → 2026-03-30 (+76d) | 2027-01-20 → 2026-05-05 (-260d) |  |  |
| CON-LEG101-PR-3460 | PO for Access Switch 48 port | 2026-01-13 → 2026-03-30 A (+76d) | 2026-01-18 → 2026-03-30 A (+71d) | 0% → 100% | 19d → none |
| CON-LEG101-PR-3470 | Material Fabrication for Access Switch 48 port | 2026-09-30 → 2026-04-04 A (-179d) | 2026-12-26 → 2026-04-30 A (-240d) | 0% → 100% | 33d → none |
| CON-LEG101-PR-3480 | Material Delivery for Access Switch 48 port | 2026-12-27 → 2026-05-02 A (-239d) | 2027-01-12 → 2026-05-04 A (-253d) | 0% → 100% | 33d → none |
| CON-LEG101-PR-3490 | Staging Time for Access Switch 48 port | 2027-01-13 → 2026-05-05 A (-253d) | 2027-01-20 → 2026-05-05 A (-260d) | 0% → 100% | 33d → none |
| 6 | **Server** | 2026-01-13 → 2026-03-30 (+76d) | 2026-11-10 → 2026-05-05 (-189d) |  |  |
| CON-LEG101-PR-3500 | PO for Server | 2026-01-13 → 2026-03-30 A (+76d) | 2026-01-18 → 2026-03-30 A (+71d) | 0% → 100% | 19d → none |
| CON-LEG101-PR-3510 | Material Fabrication for Server | 2026-07-01 → 2026-04-04 A (-88d) | 2026-09-29 → 2026-04-30 A (-152d) | 0% → 100% | 9d → none |
| CON-LEG101-PR-3520 | Material Delivery for Server | 2026-09-30 → 2026-05-02 A (-151d) | 2026-10-20 → 2026-05-04 A (-169d) | 0% → 100% | 21d → none |
| CON-LEG101-PR-3530 | Staging Time for Server | 2026-10-21 → 2026-05-05 A (-169d) | 2026-11-10 → 2026-05-05 A (-189d) | 0% → 100% | 21d → none |
| 7 | **Stand rack 42U- 19"** | 2026-01-13 → 2026-03-30 (+76d) | 2027-01-30 → 2026-05-05 (-270d) |  |  |
| CON-LEG101-PR-3540 | PO for Stand rack 42U- 19" | 2026-01-13 → 2026-03-30 A (+76d) | 2026-01-19 → 2026-03-30 A (+70d) | 0% → 100% | 18d → none |
| CON-LEG101-PR-3550 | Material Fabrication for Stand rack 42U- 19" | 2026-09-30 → 2026-04-04 A (-179d) | 2026-12-26 → 2026-04-30 A (-240d) | 0% → 100% | 24d → none |
| CON-LEG101-PR-3560 | Material Delivery for Stand rack 42U- 19" | 2026-12-27 → 2026-05-02 A (-239d) | 2027-01-12 → 2026-05-04 A (-253d) | 0% → 100% | 29d → none |
| CON-LEG101-PR-3570 | Staging Time for Stand rack 42U- 19" | 2027-01-13 → 2026-05-05 A (-253d) | 2027-01-30 → 2026-05-05 A (-270d) | 0% → 100% | 29d → none |
| 8 | **IP Outdoor CCTV POE Camera,5 MP, Metal Housing** | 2026-01-13 → 2026-03-30 (+76d) | 2026-11-01 → 2026-05-05 (-180d) |  |  |
| CON-LEG101-PR-3580 | PO for IP Outdoor CCTV POE Camera,5 MP, Metal Housing | 2026-01-13 → 2026-03-30 A (+76d) | 2026-01-18 → 2026-03-30 A (+71d) | 0% → 100% | 19d → none |
| CON-LEG101-PR-3590 | Material Fabrication for IP Outdoor CCTV POE Camera,5 MP, Metal Housing | 2026-07-01 → 2026-04-04 A (-88d) | 2026-09-27 → 2026-04-30 A (-150d) | 0% → 100% | 9d → none |
| CON-LEG101-PR-3600 | Material Delivery for IP Outdoor CCTV POE Camera,5 MP, Metal Housing | 2026-09-28 → 2026-05-02 A (-149d) | 2026-10-14 → 2026-05-04 A (-163d) | 0% → 100% | 18d → none |
| CON-LEG101-PR-3610 | Staging Time for IP Outdoor CCTV POE Camera,5 MP, Metal Housing | 2026-10-15 → 2026-05-05 A (-163d) | 2026-11-01 → 2026-05-05 A (-180d) | 0% → 100% | 18d → none |
| 9 | **Outdoor PTZ with IR, HDTV 1080 and 31x optical, 12x digital** | 2026-01-13 → 2026-03-30 (+76d) | 2026-11-30 → 2026-05-05 (-209d) |  |  |
| CON-LEG101-PR-3620 | PO for Outdoor PTZ with IR, HDTV 1080 and 31x optical, 12x digital | 2026-01-13 → 2026-03-30 A (+76d) | 2026-01-18 → 2026-03-30 A (+71d) | 0% → 100% | 19d → none |
| CON-LEG101-PR-3630 | Material Fabrication for Outdoor PTZ with IR, HDTV 1080 and 31x optical, 12x digital | 2026-07-01 → 2026-04-04 A (-88d) | 2026-10-14 → 2026-04-30 A (-167d) | 0% → 100% | 9d → none |
| CON-LEG101-PR-3640 | Material Delivery for Outdoor PTZ with IR, HDTV 1080 and 31x optical, 12x digital | 2026-11-02 → 2026-05-02 A (-184d) | 2026-11-18 → 2026-05-04 A (-198d) | 0% → 100% | 18d → none |
| CON-LEG101-PR-3650 | Staging Time for Outdoor PTZ with IR, HDTV 1080 and 31x optical, 12x digital | 2026-11-19 → 2026-05-05 A (-198d) | 2026-11-30 → 2026-05-05 A (-209d) | 0% → 100% | 18d → none |
| 10 | **Security workstation with 1 x 19" LED screen** | 2026-01-13 → 2026-03-30 (+76d) | 2027-02-04 → 2026-05-05 (-275d) |  |  |
| CON-LEG101-PR-3660 | PO for Security workstation with 1 x 19" LED screen | 2026-01-13 → 2026-03-30 A (+76d) | 2026-01-18 → 2026-03-30 A (+71d) | 0% → 100% | 19d → none |
| CON-LEG101-PR-3670 | Material Fabrication for Security workstation with 1 x 19" LED screen | 2026-09-30 → 2026-04-04 A (-179d) | 2027-01-12 → 2026-04-30 A (-257d) | 0% → 100% | 24d → none |
| CON-LEG101-PR-3680 | Material Delivery for Security workstation with 1 x 19" LED screen | 2027-01-13 → 2026-05-02 A (-256d) | 2027-01-24 → 2026-05-04 A (-265d) | 0% → 100% | 24d → none |
| CON-LEG101-PR-3690 | Staging Time for Security workstation with 1 x 19" LED screen | 2027-01-25 → 2026-05-05 A (-265d) | 2027-02-04 → 2026-05-05 A (-275d) | 0% → 100% | 24d → none |
| 11 | **Horizontal Power Distribution Unit (min 8 outlets)** | 2026-01-13 → 2026-03-30 (+76d) | 2027-02-28 → 2026-05-05 (-299d) |  |  |
| CON-LEG101-PR-3700 | PO for Horizontal Power Distribution Unit (min 8 outlets) | 2026-01-13 → 2026-03-30 A (+76d) | 2026-01-18 → 2026-03-30 A (+71d) | 0% → 100% | 19d → none |
| CON-LEG101-PR-3710 | Material Fabrication for Horizontal Power Distribution Unit (min 8 outlets) | 2026-09-30 → 2026-04-04 A (-179d) | 2027-01-12 → 2026-04-30 A (-257d) | 0% → 100% | 24d → none |
| CON-LEG101-PR-3720 | Material Delivery for Horizontal Power Distribution Unit (min 8 outlets) | 2027-01-13 → 2026-05-02 A (-256d) | 2027-02-04 → 2026-05-04 A (-276d) | 0% → 100% | 24d → none |
| CON-LEG101-PR-3730 | Staging Time for Horizontal Power Distribution Unit (min 8 outlets) | 2027-02-06 → 2026-05-02 A (-280d) | 2027-02-28 → 2026-05-05 A (-299d) | 0% → 100% | 24d → none |
| 12 | **35 Meters mono pole with Double Platform for Access Points** | 2026-01-13 → 2026-03-30 (+76d) | 2027-03-06 → 2026-05-04 (-306d) |  |  |
| CON-LEG101-PR-3800 | PO for 35 Meters mono pole with Double Platform for Access Points | 2026-01-13 → 2026-03-30 A (+76d) | 2026-01-18 → 2026-03-30 A (+71d) | 0% → 100% | 19d → none |
| CON-LEG101-PR-3810 | Material Fabrication for 35 Meters mono pole with Double Platform for Access Points | 2026-09-30 → 2026-04-04 A (-179d) | 2027-01-12 → 2026-04-30 A (-257d) | 0% → 100% | 28d → none |
| CON-LEG101-PR-3820 | Material Delivery for 35 Meters mono pole with Double Platform for Access Points | 2027-01-13 → 2026-05-02 A (-256d) | 2027-02-04 → 2026-05-04 A (-276d) | 0% → 100% | 28d → none |
| CON-LEG101-PR-3830 | Staging Time for 35 Meters mono pole with Double Platform for Access Points | 2027-02-06 → 2026-05-02 A (-280d) | 2027-03-06 → 2026-05-04 A (-306d) | 0% → 100% | 28d → none |
| 13 | **25 Meters pole for CCTV Cameras** | 2026-01-13 → 2026-03-30 (+76d) | 2026-11-30 → 2026-05-04 (-210d) |  |  |
| CON-LEG101-PR-3840 | PO for 25 Meters pole for CCTV Cameras | 2026-01-13 → 2026-03-30 A (+76d) | 2026-01-18 → 2026-03-30 A (+71d) | 0% → 100% | 19d → none |
| CON-LEG101-PR-3850 | Material Fabrication for 25 Meters pole for CCTV Cameras | 2026-07-13 → 2026-04-04 A (-100d) | 2026-10-26 → 2026-04-30 A (-179d) | 0% → 100% | 9d → none |
| CON-LEG101-PR-3860 | Material Delivery for 25 Meters pole for CCTV Cameras | 2026-10-27 → 2026-05-02 A (-178d) | 2026-11-12 → 2026-05-04 A (-192d) | 0% → 100% | 27d → none |
| CON-LEG101-PR-3870 | Staging Time for 25 Meters pole for CCTV Cameras | 2026-11-14 → 2026-05-02 A (-196d) | 2026-11-30 → 2026-05-04 A (-210d) | 0% → 100% | 27d → none |
| 14 | **Short Range wireless point to point wireless bridge** | 2026-01-13 → 2026-03-30 (+76d) | 2026-11-24 → 2026-05-04 (-204d) |  |  |
| CON-LEG101-PR-3880 | PO for Short Range wireless point to point wireless bridge | 2026-01-13 → 2026-03-30 A (+76d) | 2026-01-18 → 2026-03-30 A (+71d) | 0% → 100% | 19d → none |
| CON-LEG101-PR-3890 | Material Fabrication for Short Range wireless point to point wireless bridge | 2026-07-13 → 2026-04-04 A (-100d) | 2026-10-26 → 2026-04-30 A (-179d) | 0% → 100% | 9d → none |
| CON-LEG101-PR-3900 | Material Delivery for Short Range wireless point to point wireless bridge | 2026-10-27 → 2026-05-02 A (-178d) | 2026-11-12 → 2026-05-04 A (-192d) | 0% → 100% | 9d → none |
| CON-LEG101-PR-3910 | Staging Time for Short Range wireless point to point wireless bridge | 2026-11-14 → 2026-05-02 A (-196d) | 2026-11-24 → 2026-05-04 A (-204d) | 0% → 100% | 9d → none |
| 6 | **Landscape Works** | 2026-01-10 → 2026-01-01 (-9d) | 2027-09-14 → 2027-09-07 (-7d) |  |  |
| 1 | **HDPE Pipes** | 2026-01-10 → 2026-01-01 (-9d) | 2026-12-23 → 2026-02-21 (-305d) |  |  |
| CON-LEG101-PR-3920 | PO for HDPE Pipes | 2026-01-10 → 2026-01-01 A (-9d) | 2026-01-17 → 2026-01-01 A (-16d) | 0% → 100% | 20d → none |
| CON-LEG101-PR-3930 | Material Fabrication for HDPE Pipes | 2026-08-06 → 2026-01-03 A (-215d) | 2026-10-15 → 2026-02-09 A (-248d) | 0% → 100% | 0d → none |
| CON-LEG101-PR-3940 | Material Delivery for HDPE Pipes | 2026-11-25 → 2026-02-10 A (-288d) | 2026-12-12 → 2026-02-21 A (-294d) | 0% → 100% | 9d → none |
| CON-LEG101-PR-3980 | Staging Time for HDPE Pipes | 2026-12-13 → 2026-02-12 A (-304d) | 2026-12-23 → 2026-02-21 A (-305d) | 0% → 100% | 9d → none |
| 9 | **Curbs and edging** | 2026-01-13 → 2026-02-01 (+19d) | 2027-01-17 → 2026-07-28 (-173d) |  |  |
| CON-LEG101-PR-2890 | PO for Curbs and edging | 2026-01-13 → 2026-02-01 A (+19d) | 2026-01-18 → 2026-02-02 A (+15d) | 0% → 100% | 19d → none |
| CON-LEG101-PR-2950 | Material Fabrication for Curbs and edging | 2026-10-17 → 2026-04-11 A (-189d) | 2026-12-24 → 2026-07-25 A (-152d) | 0% → 100% | 0d → none |
| CON-LEG101-PR-3010 | Material Delivery for Curbs and edging | 2026-12-26 → 2026-07-01 A (-178d) | 2027-01-05 → 2026-07-26 A (-163d) | 0% → 100% | 8d → none |
| CON-LEG101-PR-3070 | Staging Time for Curbs and edging | 2027-01-06 → 2026-07-02 A (-188d) | 2027-01-17 → 2026-07-28 A (-173d) | 0% → 100% | 8d → none |
| 4 | **Electrical Solenoid Valve** | 2026-01-13 → 2026-03-25 (+71d) | 2027-01-28 → 2027-01-21 (-7d) |  |  |
| CON-LEG101-PR-2840 | PO for Electrical Solenoid Valve | 2026-01-13 → 2026-03-25 A (+71d) | 2026-01-18 → 2026-03-25 A (+66d) | 0% → 100% | 19d → none |
| CON-LEG101-PR-2900 | Material Fabrication for Electrical Solenoid Valve | 2026-10-28 → 2026-04-11 A (-200d) | 2027-01-05 → 2026-11-03 (-63d) | 0% → 60% | 0d → 62d |
| CON-LEG101-PR-2960 | Material Delivery for Electrical Solenoid Valve | 2027-01-06 → 2026-11-04 (-63d) | 2027-01-17 → 2026-11-15 (-63d) |  | 8d → 62d |
| CON-LEG101-PR-3020 | Staging Time for Electrical Solenoid Valve | 2027-01-18 → 2027-01-11 (-7d) | 2027-01-28 → 2027-01-21 (-7d) |  | 8d → 14d |
| 5 | **Quick coupler valve** | 2026-01-13 → 2026-03-25 (+71d) | 2027-02-18 → 2027-02-07 (-11d) |  |  |

| ID | Task | Start | Finish | Complete | Total float | Other |
| --- | --- | --- | --- | --- | --- | --- |
| CON-LEG101-PR-2850 | PO for Quick coupler valve | 2026-01-13 → 2026-03-25 A (+71d) | 2026-01-18 → 2026-03-25 A (+66d) | 0% → 100% | 19d → none |  |
| CON-LEG101-PR-2910 | Material Fabrication for Quick coupler valve | 2026-10-28 → 2026-04-11 A (-200d) | 2027-01-05 → 2026-11-03 (-63d) | 0% → 60% | 0d → 82d |  |
| CON-LEG101-PR-2970 | Material Delivery for Quick coupler valve | 2027-01-30 → 2027-01-23 (-7d) | 2027-02-06 → 2027-01-30 (-7d) |  | 8d → 14d |  |
| CON-LEG101-PR-3030 | Staging Time for Quick coupler valve | 2027-02-07 → 2027-01-31 (-7d) | 2027-02-18 → 2027-02-07 (-11d) |  | 8d → 14d |  |
| 2 | **Flush valve** | 2026-01-13 → 2026-03-25 (+71d) | 2027-03-15 → 2027-03-08 (-7d) |  |  |  |
| CON-LEG101-PR-3080 | PO for Flush valve | 2026-01-13 → 2026-03-25 A (+71d) | 2026-01-18 → 2026-03-25 A (+66d) | 0% → 100% | 19d → none |  |
| CON-LEG101-PR-3090 | Material Fabrication for Flush valve | 2026-10-28 → 2026-04-11 A (-200d) | 2027-01-05 → 2026-11-03 (-63d) | 0% → 60% | 0d → 96d |  |
| CON-LEG101-PR-3100 | Material Delivery for Flush valve | 2027-02-20 → 2027-02-08 (-12d) | 2027-03-03 → 2027-02-24 (-7d) |  | 8d → 14d |  |
| CON-LEG101-PR-3110 | Staging Time for Flush valve | 2027-03-04 → 2027-02-25 (-7d) | 2027-03-15 → 2027-03-08 (-7d) |  | 8d → 14d |  |
| 6 | **Irrigation controller** | 2026-01-13 → 2026-03-25 (+71d) | 2027-04-07 → 2027-03-31 (-7d) |  |  |  |
| CON-LEG101-PR-2860 | PO for Irrigation controller | 2026-01-13 → 2026-03-25 A (+71d) | 2026-01-18 → 2026-03-25 A (+66d) | 0% → 100% | 19d → none |  |
| CON-LEG101-PR-2920 | Material Fabrication for Irrigation controller | 2026-10-28 → 2026-04-11 A (-200d) | 2027-01-05 → 2026-11-03 (-63d) | 0% → 60% | 0d → 106d |  |
| CON-LEG101-PR-2980 | Material Delivery for Irrigation controller | 2027-03-16 → 2027-03-09 (-7d) | 2027-03-27 → 2027-03-20 (-7d) |  | 8d → 14d |  |
| CON-LEG101-PR-3040 | Staging Time for Irrigation controller | 2027-03-28 → 2027-03-21 (-7d) | 2027-04-07 → 2027-03-31 (-7d) |  | 8d → 14d |  |
| 3 | **Decoder for valve** | 2026-01-13 → 2026-03-25 (+71d) | 2027-05-04 → 2027-04-27 (-7d) |  |  |  |
| CON-LEG101-PR-3120 | PO for Decoder for valve | 2026-01-13 → 2026-03-25 A (+71d) | 2026-01-18 → 2026-03-25 A (+66d) | 0% → 100% | 19d → none |  |
| CON-LEG101-PR-3130 | Material Fabrication for Decoder for valve | 2026-10-28 → 2026-04-11 A (-200d) | 2027-01-05 → 2026-11-03 (-63d) | 0% → 60% | 0d → 106d |  |
| CON-LEG101-PR-3140 | Material Delivery for Decoder for valve | 2027-04-08 → 2027-04-01 (-7d) | 2027-04-22 → 2027-04-15 (-7d) |  | 8d → 14d |  |
| CON-LEG101-PR-3150 | Staging Time for Decoder for valve | 2027-04-24 → 2027-04-17 (-7d) | 2027-05-04 → 2027-04-27 (-7d) |  | 8d → 14d |  |
| 7 | **Decoder Cables** | 2026-01-13 → 2026-03-25 (+71d) | 2027-05-20 → 2027-05-09 (-11d) |  |  |  |
| CON-LEG101-PR-2870 | PO for Decoder Cables | 2026-01-13 → 2026-03-25 A (+71d) | 2026-01-18 → 2026-03-25 A (+66d) | 0% → 100% | 19d → none |  |
| CON-LEG101-PR-2930 | Material Fabrication for Decoder Cables | 2026-10-28 → 2026-04-11 A (-200d) | 2027-01-05 → 2026-11-03 (-63d) | 0% → 60% | 0d → 106d |  |
| CON-LEG101-PR-2990 | Material Delivery for Decoder Cables | 2027-01-06 → 2026-11-04 (-63d) | 2027-01-17 → 2026-11-15 (-63d) |  | 0d → 106d | resources Supply and installation of Decoder cables 12 AWG between valves and controllers, The cables shall be pulled through 32Ø UPVC conduit and inspection 10" round valve box every 100 meters, as per standard specification and drawings [645]; Labor [535 h] → Supply and installation of Decoder cables 12 AWG between valves and controllers, The cables shall be pulled through 32? UPVC conduit and inspection 10" round valve box every 100 meters, as per standard specification and drawings [645]; Labor [535 h] |
| CON-LEG101-PR-3050 | Staging Time for Decoder Cables | 2027-05-05 → 2027-04-28 (-7d) | 2027-05-20 → 2027-05-09 (-11d) |  | 8d → 14d |  |
| 8 | **Shrubs And Ground Cover** | 2026-01-13 → 2026-03-25 (+71d) | 2027-09-14 → 2027-09-07 (-7d) |  |  |  |
| CON-LEG101-PR-2880 | PO for agricultural soil | 2026-01-13 → 2026-03-25 A (+71d) | 2026-01-18 → 2026-03-25 A (+66d) | 0% → 100% | 19d → none |  |
| CON-LEG101-PR-3000 | Material Delivery for agricultural soil | 2027-05-22 → 2027-05-10 (-12d) | 2027-09-02 → 2027-08-26 (-7d) |  | 8d → 14d |  |
| CON-LEG101-PR-3060 | Staging Time for agricultural soil | 2027-09-04 → 2027-08-28 (-7d) | 2027-09-14 → 2027-09-07 (-7d) |  | 8d → 14d |  |
| 4 | **Bridge Works** | 2026-01-06 → 2026-02-01 (+26d) | 2027-05-19 → 2027-04-22 (-27d) |  |  |  |
| 3 | **Prestressing Strands** | 2026-01-06 → 2026-02-11 (+36d) | 2026-06-01 → 2026-03-26 (-67d) |  |  |  |
| CON-LEG101-PR-2120 | PO for Prestressing Strands | 2026-01-06 → 2026-02-11 A (+36d) | 2026-01-13 → 2026-02-12 A (+30d) | 0% → 100% | 22d → none |  |
| CON-LEG101-PR-2130 | Material for Prestressing Strands | 2026-01-14 → 2026-02-12 A (+29d) | 2026-04-16 → 2026-03-17 A (-30d) | 0% → 100% | 22d → none |  |
| CON-LEG101-PR-2140 | Material Delivery for Prestressing Strands | 2026-04-18 → 2026-03-10 A (-39d) | 2026-05-04 → 2026-03-25 A (-40d) | 0% → 100% | 22d → none |  |
| CON-LEG101-PR-2400 | Staging Time for Prestressing Strands | 2026-05-05 → 2026-03-11 A (-55d) | 2026-06-01 → 2026-03-26 A (-67d) | 0% → 100% | 22d → none |  |
| 6 | **Bridge Bearings** | 2026-01-12 → 2026-02-11 (+30d) | 2026-07-12 → 2026-04-21 (-82d) |  |  |  |
| CON-LEG101-PR-2180 | PO for Bridge Bearings | 2026-01-12 → 2026-02-11 A (+30d) | 2026-01-17 → 2026-02-12 A (+26d) | 0% → 100% | 9d → none |  |
| CON-LEG101-PR-2190 | Material Fabrication for Bridge Bearings | 2026-01-18 → 2026-02-12 A (+25d) | 2026-04-20 → 2026-04-02 A (-18d) | 0% → 100% | 9d → none |  |
| CON-LEG101-PR-2200 | Material Delivery for Bridge Bearings | 2026-06-02 → 2026-04-19 A (-44d) | 2026-06-18 → 2026-04-20 A (-59d) | 0% → 100% | 22d → none |  |
| CON-LEG101-PR-2240 | Staging Time for Bridge Bearings | 2026-06-20 → 2026-04-21 A (-60d) | 2026-07-12 → 2026-04-21 A (-82d) | 0% → 100% | 22d → none |  |
| 8 | **Bridge Gully (Scupper) drainage** | 2026-01-12 → 2026-03-25 (+72d) | 2026-08-27 → 2026-06-21 (-67d) |  |  |  |
| CON-LEG101-PR-2370 | PO for Bridge Gully (Scupper) drainage | 2026-01-12 → 2026-03-25 A (+72d) | 2026-01-17 → 2026-03-25 A (+67d) | 0% → 100% | 20d → none |  |
| CON-LEG101-PR-2380 | Material Fabrication for Bridge Gully (Scupper) drainage | 2026-04-21 → 2026-03-28 A (-24d) | 2026-07-04 → 2026-06-18 A (-16d) | 0% → 100% | 9d → none |  |
| CON-LEG101-PR-2390 | Material Delivery for Bridge Gully (Scupper) drainage | 2026-07-13 → 2026-06-20 A (-23d) | 2026-08-04 → 2026-06-20 A (-45d) | 0% → 100% | 22d → none |  |
| CON-LEG101-PR-2410 | Staging Time for Bridge Gully (Scupper) drainage | 2026-08-05 → 2026-06-21 A (-45d) | 2026-08-27 → 2026-06-21 A (-67d) | 0% → 100% | 22d → none |  |
| 4 | **New Jersey** | 2026-01-12 → 2026-02-01 (+20d) | 2026-10-06 → 2026-06-21 (-107d) |  |  |  |
| CON-LEG101-PR-2150 | PO for New Jersey | 2026-01-12 → 2026-02-01 A (+20d) | 2026-01-17 → 2026-02-01 A (+15d) | 0% → 100% | 20d → none |  |
| CON-LEG101-PR-2160 | Material Fabrication for New Jersey | 2026-07-05 → 2026-03-26 A (-101d) | 2026-09-12 → 2026-06-18 A (-86d) | 0% → 100% | 9d → none |  |
| CON-LEG101-PR-2170 | Material Delivery for New Jersey | 2026-09-13 → 2026-06-20 A (-85d) | 2026-09-24 → 2026-06-20 A (-96d) | 0% → 100% | 9d → none |  |
| CON-LEG101-PR-2420 | Staging Time for New Jersey | 2026-09-26 → 2026-06-21 A (-97d) | 2026-10-06 → 2026-06-21 A (-107d) | 0% → 100% | 9d → none |  |
| 7 | **Expansion Joints** | 2026-01-12 → 2026-02-11 (+30d) | 2027-01-07 → 2026-06-21 (-200d) |  |  |  |
| CON-LEG101-PR-2210 | PO for Expansion Joints | 2026-01-12 → 2026-02-11 A (+30d) | 2026-01-17 → 2026-02-12 A (+26d) | 0% → 100% | 20d → none |  |
| CON-LEG101-PR-2220 | Material Fabrication for Expansion Joints | 2026-10-07 → 2026-02-12 A (-237d) | 2026-12-15 → 2026-06-18 A (-180d) | 0% → 100% | 9d → none |  |
| CON-LEG101-PR-2230 | Material Delivery for Expansion Joints | 2026-12-16 → 2026-06-20 A (-179d) | 2026-12-27 → 2026-06-20 A (-190d) | 0% → 100% | 9d → none |  |
| CON-LEG101-PR-2250 | Staging Time for Expansion Joints | 2026-12-28 → 2026-06-21 A (-190d) | 2027-01-07 → 2026-06-21 A (-200d) | 0% → 100% | 9d → none |  |
| 1 | **Guard Rail** | 2026-01-12 → 2026-03-26 (+73d) | 2027-03-27 → 2027-03-20 (-7d) |  |  |  |
| CON-LEG101-PR-2260 | PO for Guard Rail | 2026-01-12 → 2026-03-26 A (+73d) | 2026-01-17 → 2026-03-26 A (+68d) | 0% → 100% | 20d → none |  |
| CON-LEG101-PR-2270 | Material Fabrication for Guard Rail | 2026-10-07 → 2026-03-28 A (-193d) | 2027-01-02 → 2026-10-24 (-70d) | 0% → 80% | 14d → 108d |  |
| CON-LEG101-PR-2280 | Material Delivery for Guard Rail | 2027-01-09 → 2026-10-25 (-76d) | 2027-01-25 → 2026-11-10 (-76d) |  | 9d → 108d |  |
| CON-LEG101-PR-2290 | Staging Time for Guard Rail | 2027-03-04 → 2027-02-25 (-7d) | 2027-03-27 → 2027-03-20 (-7d) |  | 16d → 22d |  |
| 5 | **Logo MODON** | 2026-01-12 → 2026-03-26 (+73d) | 2027-05-19 → 2027-04-22 (-27d) |  |  |  |
| CON-LEG101-PR-2340 | PO for Logo MODON | 2026-01-12 → 2026-03-26 A (+73d) | 2026-01-17 → 2026-03-26 A (+68d) | 0% → 100% | 20d → none |  |
| CON-LEG101-PR-2350 | Material Fabrication for Logo MODON | 2027-01-09 → 2026-03-28 A (-287d) | 2027-04-11 → 2026-11-10 (-152d) | 0% → 80% | 9d → 119d |  |
| CON-LEG101-PR-2360 | Material Delivery for Logo MODON | 2027-04-12 → 2027-03-21 (-22d) | 2027-05-03 → 2027-04-11 (-22d) |  | 9d → 28d |  |
| CON-LEG101-PR-2430 | Staging Time for Logo MODON | 2027-05-04 → 2027-04-12 (-22d) | 2027-05-19 → 2027-04-22 (-27d) |  | 9d → 28d |  |
| 2 | **GRP Panel** | 2026-01-12 → 2026-03-26 (+73d) | 2027-04-25 → 2027-04-18 (-7d) |  |  |  |
| CON-LEG101-PR-2300 | PO for GRP Panel | 2026-01-12 → 2026-03-26 A (+73d) | 2026-01-17 → 2026-03-26 A (+68d) | 0% → 100% | 20d → none |  |
| CON-LEG101-PR-2310 | Material Fabrication for GRP Panel | 2027-01-09 → 2026-03-28 A (-287d) | 2027-03-24 → 2026-11-21 (-123d) | 0% → 60% | 18d → 119d |  |
| CON-LEG101-PR-2320 | Material Delivery for GRP Panel | 2027-03-28 → 2027-03-21 (-7d) | 2027-04-13 → 2027-04-06 (-7d) |  | 16d → 22d |  |
| CON-LEG101-PR-2330 | Staging Time for GRP Panel | 2027-04-14 → 2027-04-07 (-7d) | 2027-04-25 → 2027-04-18 (-7d) |  | 16d → 22d |  |
| 11 | **Irrigation Works** | 2026-01-12 → 2026-03-25 (+72d) | 2027-06-28 → 2027-08-21 (+54d) |  |  |  |

| ID | Task | Start | Finish | Complete | Total float |
| --- | --- | --- | --- | --- | --- |
| 1 | **Flush valve** | 2026-01-17 → 2026-03-25 (+67d) | 2027-05-08 → 2027-08-21 (+105d) |  |  |
| CON-LEG101-PR-2640 | PO for Flush valve | 2026-01-17 → 2026-03-25 A (+67d) | 2026-01-19 → 2026-03-25 A (+65d) | 0% → 100% | 18d → none |
| CON-LEG101-PR-2680 | Material Fabrication for Flush valve | 2027-01-18 → 2026-04-11 A (-282d) | 2027-04-03 → 2026-12-13 (-111d) | 0% → 60% | 0d → 106d |
| CON-LEG101-PR-2720 | Material Delivery for Flush valve | 2027-04-04 → 2026-12-14 (-111d) | 2027-04-26 → 2027-01-05 (-111d) |  | 16d → 106d |
| CON-LEG101-PR-2760 | Staging Time for Flush valve | 2027-04-27 → 2027-08-09 (+104d) | 2027-05-08 → 2027-08-21 (+105d) |  | 16d → -69.2d |
| 4 | **16 mm dia (O.D.) linear low density polyethylene tubing** | 2026-01-12 → 2026-03-25 (+72d) | 2027-05-11 → 2026-04-20 (-386d) |  |  |
| CON-LEG101-PR-2650 | PO for 16 mm dia (O.D.) linear low density polyethylene tubing | 2026-01-12 → 2026-03-25 A (+72d) | 2026-01-19 → 2026-03-25 A (+65d) | 0% → 100% | 18d → none |
| CON-LEG101-PR-2690 | Material Fabrication for 16 mm dia (O.D.) linear low density polyethylene tubing | 2027-01-18 → 2026-04-11 A (-282d) | 2027-04-14 → 2026-04-16 A (-363d) | 0% → 100% | 0d → none |
| CON-LEG101-PR-2730 | Material Delivery for 16 mm dia (O.D.) linear low density polyethylene tubing | 2027-04-15 → 2026-04-18 A (-362d) | 2027-04-29 → 2026-04-19 A (-375d) | 0% → 100% | 0d → none |
| CON-LEG101-PR-2770 | Staging Time for 16 mm dia (O.D.) linear low density polyethylene tubing | 2027-05-01 → 2026-04-20 A (-376d) | 2027-05-11 → 2026-04-20 A (-386d) | 0% → 100% | 0d → none |
| 5 | **Irrigation Controller** | 2026-01-14 → 2026-03-25 (+70d) | 2027-06-20 → 2026-04-20 (-426d) |  |  |
| CON-LEG101-PR-2660 | PO for Irrigation Controller | 2026-01-14 → 2026-03-25 A (+70d) | 2026-01-19 → 2026-03-25 A (+65d) | 0% → 100% | 18d → none |
| CON-LEG101-PR-2700 | Material Fabrication for Irrigation Controller | 2027-01-26 → 2026-04-11 A (-290d) | 2027-04-28 → 2026-04-16 A (-377d) | 0% → 100% | 10d → none |
| CON-LEG101-PR-2740 | Material Delivery for Irrigation Controller | 2027-05-12 → 2026-04-18 A (-389d) | 2027-06-08 → 2026-04-19 A (-415d) | 0% → 100% | 10d → none |
| CON-LEG101-PR-2780 | Staging Time for Irrigation Controller | 2027-06-09 → 2026-04-20 A (-415d) | 2027-06-20 → 2026-04-20 A (-426d) | 0% → 100% | 10d → none |
| 2 | **Single station decoder** | 2026-01-15 → 2026-03-25 (+69d) | 2027-06-14 → 2026-04-20 (-420d) |  |  |
| CON-LEG101-PR-2800 | PO for Single station decoder | 2026-01-15 → 2026-03-25 A (+69d) | 2026-01-19 → 2026-03-25 A (+65d) | 0% → 100% | 18d → none |
| CON-LEG101-PR-2810 | Material Fabrication for Single station decoder | 2027-02-02 → 2026-04-11 A (-297d) | 2027-05-05 → 2026-04-16 A (-384d) | 0% → 100% | 10d → none |
| CON-LEG101-PR-2820 | Material Delivery for Single station decoder | 2027-05-06 → 2026-04-18 A (-383d) | 2027-06-02 → 2026-04-19 A (-409d) | 0% → 100% | 10d → none |
| CON-LEG101-PR-2830 | Staging Time for Single station decoder | 2027-06-03 → 2026-04-20 A (-409d) | 2027-06-14 → 2026-04-20 A (-420d) | 0% → 100% | 10d → none |
| 6 | **Decoder cables 12 AWG** | 2026-01-17 → 2026-03-25 (+67d) | 2027-06-28 → 2026-04-20 (-434d) |  |  |
| CON-LEG101-PR-2670 | PO for Decoder cables 12 AWG | 2026-01-17 → 2026-03-25 A (+67d) | 2026-01-19 → 2026-03-25 A (+65d) | 0% → 100% | 18d → none |
| CON-LEG101-PR-2710 | Material Fabrication for Decoder cables 12 AWG | 2027-02-15 → 2026-04-11 A (-310d) | 2027-05-13 → 2026-04-16 A (-392d) | 0% → 100% | 12d → none |
| CON-LEG101-PR-2750 | Material Delivery for Decoder cables 12 AWG | 2027-05-19 → 2026-04-18 A (-396d) | 2027-06-10 → 2026-04-19 A (-417d) | 0% → 100% | 12d → none |
| CON-LEG101-PR-2790 | Staging Time for Decoder cables 12 AWG | 2027-06-12 → 2026-04-20 A (-418d) | 2027-06-28 → 2026-04-20 A (-434d) | 0% → 100% | 12d → none |
| 1 | **Construction** | 2025-12-20 → 2025-11-20 (-30d) | 2027-10-18 → 2028-04-04 (+169d) |  |  |
| 9 | **Site Demolition** | 2025-12-20 → 2025-11-20 (-30d) | 2026-03-03 → 2026-02-02 (-29d) |  |  |
| CON-LEG101-SD-1000 | Removal of chain link fence [Demolition Works ] | 2025-12-20 → 2025-11-20 A (-30d) | 2026-01-12 → 2025-11-30 A (-43d) | 0% → 100% | 0d → none |
| CON-LEG101-SD-1030 | Demolition of existing structures [Demolition Works ] | 2026-01-13 → 2025-11-20 A (-54d) | 2026-02-05 → 2025-12-04 A (-63d) | 0% → 100% | 0d → none |
| CON-LEG101-SD-1010 | Removal of concrete fence [Demolition Works ] | 2026-01-13 → 2025-11-24 A (-50d) | 2026-02-05 → 2025-12-03 A (-64d) | 0% → 100% | 0d → none |
| CON-LEG101-SD-1020 | Removal of Electricity distribution panel [Demolition Works ] | 2026-02-07 → 2026-02-01 A (-6d) | 2026-03-03 → 2026-02-02 A (-29d) | 0% → 100% | 8d → none |
| 1 | **Roads & Meduim Voltage** | 2026-01-06 → 2025-12-01 (-36d) | 2026-09-17 → 2027-06-05 (+261d) |  |  |
| 1 | **Local – 01** | 2026-01-06 → 2025-12-01 (-36d) | 2026-09-17 → 2027-05-19 (+244d) |  |  |
| 1 | **LOCAL - 01 Segment-01 (From 0+000 to 1+066)** | 2026-01-06 → 2025-12-01 (-36d) | 2026-08-17 → 2027-03-31 (+226d) |  |  |
| 7 | **Road Works** | 2026-01-20 → 2025-12-01 (-50d) | 2026-08-17 → 2026-07-16 (-32d) |  |  |
| 1 | **Earthworks and Site Grading** | 2026-01-20 → 2025-12-01 (-50d) | 2026-05-11 → 2026-04-20 (-21d) |  |  |
| CON-LEG101-LR-2760 | Parcrels Excavation for Roadway [Local – 01 Segment-01] | 2026-02-14 → 2025-12-01 A (-75d) | 2026-03-09 → 2026-04-19 A (+41d) | 0% → 100% | 6d → none |
| CON-LEG101-LR-4570 | Embankments to the parcels for roads [Local – 01 Segment-01] | 2026-04-18 → 2025-12-06 A (-133d) | 2026-05-11 → 2025-12-29 A (-133d) | 0% → 100% | 22d → none |
| CON-LEG101-LR-1360 | Excavation for Roadway [Local – 01 Segment-01] | 2026-01-20 → 2025-12-15 A (-36d) | 2026-02-12 → 2026-04-19 A (+66d) | 0% → 100% | 0d → none |
| CON-LEG101-LR-4070 | Embankments to the roads [Local – 01 Segment-01] | 2026-03-10 → 2025-12-17 A (-83d) | 2026-03-31 → 2026-04-20 A (+20d) | 0% → 100% | 7d → none |
| 2 | **Asphalt Work** | 2026-06-16 → 2025-12-25 (-173d) | 2026-08-17 → 2026-07-16 (-32d) |  |  |
| CON-LEG101-LR-5580 | Subgrade [Local – 01 Segment-01] | 2026-06-16 → 2025-12-25 A (-173d) | 2026-07-01 → 2026-04-27 A (-65d) | 0% → 100% | 13d → none |
| CON-LEG101-LR-5680 | Aggregate base course [Local – 01 Segment-01] | 2026-07-23 → 2026-04-28 A (-86d) | 2026-08-03 → 2026-07-14 A (-20d) | 0% → 100% | 12d → none |
| CON-LEG101-LR-5780 | Prime Coat (MC1) [Local – 01 Segment-01] | 2026-08-04 → 2026-05-14 A (-82d) | 2026-08-10 → 2026-07-15 A (-26d) | 0% → 100% | 12d → none |
| CON-LEG101-LR-5880 | Bituminous Base Course [Local – 01 Segment-01] | 2026-08-11 → 2026-05-19 A (-84d) | 2026-08-17 → 2026-07-16 A (-32d) | 0% → 100% | 12d → none |
| 8 | **Electrical Works** | 2026-01-06 → 2026-04-11 (+95d) | 2026-07-16 → 2027-03-31 (+258d) |  |  |
| CON-LEG101-LR-15000 | Approval of Subcontractor / Supplier / Consultant for Medium Voltage from SEC | 2026-01-06 → 2026-10-07 (+274d) | 2026-01-17 → 2026-10-18 (+274d) |  | 9d → -145d |
| CON-LEG101-LR-15010 | Approval Materials of Medium Voltage from SEC | 2026-01-18 → 2026-10-19 (+274d) | 2026-01-28 → 2026-10-29 (+274d) |  | 9d → -145d |
| CON-LEG101-LR-15030 | PO for Medium Voltage | 2026-01-29 → 2026-10-31 (+275d) | 2026-01-31 → 2026-11-01 (+274d) |  | 9d → -145d |
| CON-LEG101-LR-15020 | Testing Materials of Medium Voltage from SEC | 2026-04-18 → 2027-01-11 (+268d) | 2026-04-22 → 2027-01-16 (+269d) |  | 13d → -145d |
| 2 | **Medium Voltage** | 2026-06-02 → 2026-04-11 (-52d) | 2026-07-16 → 2027-03-31 (+258d) |  |  |
| CON-LEG101-LR-6970 | Installation of Medium Voltage Cables Duct Banks [Local – 01 Segment-01] | 2026-06-10 → 2026-04-11 A (-60d) | 2026-06-21 → 2026-04-30 A (-52d) | 0% → 100% | 13d → none |
| CON-LEG101-LR-6880 | Excavation for Medium Voltage trench [Local – 01 Segment-01] | 2026-06-02 → 2027-02-27 (+270d) | 2026-06-09 → 2027-03-06 (+270d) |  | 13d → -145d |
| CON-LEG101-LR-7060 | Installation of Medium Voltage Cables [Local – 01 Segment-01] | 2026-06-22 → 2027-03-07 (+258d) | 2026-06-29 → 2027-03-14 (+258d) |  | 13d → -82.2d |
| CON-LEG101-LR-7150 | Installation of Straight joints cables [Local – 01 Segment-01] | 2026-06-30 → 2027-03-15 (+258d) | 2026-07-01 → 2027-03-16 (+258d) |  | 13d → -82.2d |
| CON-LEG101-LR-7240 | Installation of Cable Termination for 13.8 kv 3Cx 500 mm², Al /XLPE/LLDPE [Local – 01 Segment-01] | 2026-07-02 → 2027-03-17 (+258d) | 2026-07-05 → 2027-03-20 (+258d) |  | 13d → -82.2d |
| CON-LEG101-LR-7330 | Installation of Medium Voltage Switchgears [Local – 01 Segment-01] | 2026-07-06 → 2027-03-21 (+258d) | 2026-07-13 → 2027-03-28 (+258d) |  | 13d → -82.2d |
| CON-LEG101-LR-7680 | Installation of Cable Termination [Local – 01 Segment-01] | 2026-07-14 → 2027-03-29 (+258d) | 2026-07-16 → 2027-03-31 (+258d) |  | 13d → -82.2d |
| 2 | **LOCAL - 01 Segment-02 (From 1+066 to 2+133)** | 2026-01-20 → 2025-12-06 (-45d) | 2026-08-31 → 2027-04-18 (+230d) |  |  |
| 7 | **Road Works** | 2026-01-20 → 2025-12-06 (-45d) | 2026-08-31 → 2026-06-14 (-78d) |  |  |
| 1 | **Earthworks and Site Grading** | 2026-01-20 → 2025-12-06 (-45d) | 2026-04-26 → 2026-04-15 (-11d) |  |  |
| CON-LEG101-LR-2770 | Parcrels Excavation for Roadway [Local – 01 Segment-02] | 2026-02-14 → 2025-12-06 A (-70d) | 2026-03-07 → 2025-12-11 A (-86d) | 0% → 100% | 0d → none |
| CON-LEG101-LR-4640 | Embankments to the parcels for roads [Local – 01 Segment-02] | 2026-04-04 → 2025-12-13 A (-112d) | 2026-04-26 → 2026-04-15 A (-11d) | 0% → 100% | 0d → none |
| CON-LEG101-LR-1450 | Excavation for Roadway [Local – 01 Segment-02] | 2026-01-20 → 2025-12-16 A (-35d) | 2026-02-12 → 2026-01-19 A (-24d) | 0% → 100% | 0d → none |
| CON-LEG101-LR-4170 | Embankments to the roads [Local – 01 Segment-02] | 2026-03-08 → 2025-12-17 A (-81d) | 2026-04-02 → 2026-01-20 A (-72d) | 0% → 100% | 0d → none |
| 2 | **Asphalt Work** | 2026-06-17 → 2025-12-29 (-170d) | 2026-08-31 → 2026-06-14 (-78d) |  |  |
| CON-LEG101-LR-5590 | Subgrade [Local – 01 Segment-02] | 2026-06-17 → 2025-12-29 A (-170d) | 2026-07-02 → 2026-05-02 A (-61d) | 0% → 100% | 13d → none |
| CON-LEG101-LR-5690 | Aggregate base course [Local – 01 Segment-02] | 2026-08-02 → 2026-05-03 A (-91d) | 2026-08-17 → 2026-05-21 A (-88d) | 0% → 100% | 12d → none |
| CON-LEG101-LR-5790 | Prime Coat (MC1) [Local – 01 Segment-02] | 2026-08-18 → 2026-05-18 A (-92d) | 2026-08-24 → 2026-06-06 A (-79d) | 0% → 100% | 12d → none |
| CON-LEG101-LR-5890 | Bituminous Base Course [Local – 01 Segment-02] | 2026-08-25 → 2026-05-20 A (-97d) | 2026-08-31 → 2026-06-14 A (-78d) | 0% → 100% | 12d → none |

| ID | Task | Start | Finish | Complete | Total float |
| --- | --- | --- | --- | --- | --- |
| 8 | **Electrical Works** | 2026-06-15 → 2026-04-14 (-62d) | 2026-08-04 → 2027-04-18 (+257d) |  |  |
| 2 | **Medium Voltage** | 2026-06-15 → 2026-04-14 (-62d) | 2026-08-04 → 2027-04-18 (+257d) |  |  |
| CON-LEG101-LR-6980 | Installation of Medium Voltage Cables Duct Banks [Local – 01 Segment-02] | 2026-06-23 → 2026-04-14 A (-70d) | 2026-07-04 → 2026-04-30 A (-65d) | 0% → 100% | 12d → none |
| CON-LEG101-LR-6890 | Excavation for Medium Voltage trench [Local – 01 Segment-02] | 2026-06-15 → 2027-03-07 (+265d) | 2026-06-22 → 2027-03-14 (+265d) |  | 12d → -145d |
| CON-LEG101-LR-7070 | Installation of Medium Voltage Cables [Local – 01 Segment-02] | 2026-07-05 → 2027-03-15 (+253d) | 2026-07-12 → 2027-03-22 (+253d) |  | 12d → -79.2d |
| CON-LEG101-LR-7160 | Installation of Straight joints cables [Local – 01 Segment-02] | 2026-07-13 → 2027-03-23 (+253d) | 2026-07-18 → 2027-03-28 (+253d) |  | 12d → -79.2d |
| CON-LEG101-LR-7250 | Installation of Cable Termination for 13.8 kv 3Cx 500 mm², Al /XLPE/LLDPE [Local – 01 Segment-02] | 2026-07-19 → 2027-04-01 (+256d) | 2026-07-21 → 2027-04-04 (+257d) |  | 12d → -82.2d |
| CON-LEG101-LR-7340 | Installation of Medium Voltage Switchgears [Local – 01 Segment-02] | 2026-07-22 → 2027-04-05 (+257d) | 2026-07-29 → 2027-04-12 (+257d) |  | 12d → -82.2d |
| CON-LEG101-LR-7690 | Installation of Cable Termination [Local – 01 Segment-02] | 2026-07-30 → 2027-04-13 (+257d) | 2026-08-04 → 2027-04-18 (+257d) |  | 12d → -82.2d |
| 3 | **LOCAL - 01 Segment-03 (From 2+133 to 3+200)** | 2026-03-10 → 2025-12-28 (-72d) | 2026-09-17 → 2027-05-19 (+244d) |  |  |
| 7 | **Road Works** | 2026-03-10 → 2025-12-28 (-72d) | 2026-09-09 → 2026-09-10 (+1d) |  |  |
| 1 | **Earthworks and Site Grading** | 2026-03-10 → 2025-12-28 (-72d) | 2026-06-21 → 2026-09-10 (+81d) |  |  |
| CON-LEG101-LR-2860 | Parcrels Excavation for Roadway [Local – 01 Segment-03] | 2026-04-08 → 2025-12-28 A (-101d) | 2026-04-28 → 2026-09-10 A (+135d) | 0% → 100% | 12d → none |
| CON-LEG101-LR-4710 | Embankments to the parcels for roads [Local – 01 Segment-03] | 2026-05-24 → 2025-12-28 A (-147d) | 2026-06-21 → 2026-07-08 A (+17d) | 0% → 100% | 12d → none |
| CON-LEG101-LR-1540 | Excavation for Roadway [Local – 01 Segment-03] | 2026-03-10 → 2026-03-28 A (+18d) | 2026-04-07 → 2026-07-05 A (+89d) | 0% → 100% | 6d → none |
| CON-LEG101-LR-4270 | Embankments to the roads [Local – 01 Segment-03] | 2026-04-29 → 2026-03-30 A (-30d) | 2026-05-23 → 2026-07-05 A (+43d) | 0% → 100% | 12d → none |
| 2 | **Asphalt Work** | 2026-07-15 → 2026-06-17 (-28d) | 2026-09-09 → 2026-07-26 (-45d) |  |  |
| CON-LEG101-LR-5600 | Subgrade [Local – 01 Segment-03] | 2026-07-15 → 2026-06-17 A (-28d) | 2026-07-30 → 2026-07-13 A (-17d) | 0% → 100% | 16d → none |
| CON-LEG101-LR-5700 | Aggregate base course [Local – 01 Segment-03] | 2026-08-05 → 2026-07-11 A (-25d) | 2026-08-16 → 2026-07-23 A (-24d) | 0% → 100% | 12d → none |
| CON-LEG101-LR-5800 | Prime Coat (MC1) [Local – 01 Segment-03] | 2026-08-17 → 2026-07-18 A (-30d) | 2026-08-25 → 2026-07-25 A (-31d) | 0% → 100% | 17d → none |
| CON-LEG101-LR-5900 | Bituminous Base Course [Local – 01 Segment-03] | 2026-09-01 → 2026-07-19 A (-44d) | 2026-09-09 → 2026-07-26 A (-45d) | 0% → 100% | 12d → none |
| 8 | **Electrical Works** | 2026-08-17 → 2026-06-20 (-58d) | 2026-09-17 → 2027-05-19 (+244d) |  |  |
| 2 | **Medium Voltage** | 2026-08-17 → 2026-06-20 (-58d) | 2026-09-17 → 2027-05-19 (+244d) |  |  |
| CON-LEG101-LR-6990 | Installation of Medium Voltage Cables Duct Banks [Local – 01 Segment-03] | 2026-08-22 → 2026-06-20 A (-63d) | 2026-08-26 → 2026-07-14 A (-43d) | 0% → 100% | 12d → none |
| CON-LEG101-LR-6900 | Excavation for Medium Voltage trench [Local – 01 Segment-03] | 2026-08-17 → 2027-04-19 (+245d) | 2026-08-20 → 2027-04-22 (+245d) |  | 12d → -82.2d |
| CON-LEG101-LR-7080 | Installation of Medium Voltage Cables [Local – 01 Segment-03] | 2026-08-27 → 2027-04-24 (+240d) | 2026-09-03 → 2027-05-01 (+240d) |  | 12d → -82.2d |
| CON-LEG101-LR-7170 | Installation of Straight joints cables [Local – 01 Segment-03] | 2026-09-05 → 2027-05-02 (+239d) | 2026-09-06 → 2027-05-03 (+239d) |  | 12d → -82.2d |
| CON-LEG101-LR-7260 | Installation of Cable Termination for 13.8 kv 3Cx 500 mm², Al /XLPE/LLDPE [Local – 01 Segment-03] | 2026-09-07 → 2027-05-04 (+239d) | 2026-09-09 → 2027-05-06 (+239d) |  | 12d → -82.2d |
| CON-LEG101-LR-7350 | Installation of Medium Voltage Switchgears [Local – 01 Segment-03] | 2026-09-10 → 2027-05-08 (+240d) | 2026-09-14 → 2027-05-11 (+239d) |  | 12d → -82.2d |
| CON-LEG101-LR-7700 | Installation of Cable Termination [Local – 01 Segment-03] | 2026-09-15 → 2027-05-12 (+239d) | 2026-09-17 → 2027-05-19 (+244d) |  | 12d → -82.2d |
| 4 | **Local – 02** | 2026-03-16 → 2025-12-08 (-98d) | 2026-09-16 → 2027-05-03 (+229d) |  |  |
| 7 | **Road Works** | 2026-03-16 → 2025-12-08 (-98d) | 2026-09-16 → 2026-06-21 (-87d) |  |  |
| 1 | **Earthworks and Site Grading** | 2026-03-16 → 2025-12-08 (-98d) | 2026-08-22 → 2026-06-18 (-65d) |  |  |
| CON-LEG101-LR-2950 | Parcrels Excavation for Roadway [Local – 02 ] | 2026-06-22 → 2025-12-08 A (-196d) | 2026-07-12 → 2026-01-05 A (-188d) | 0% → 100% | 12d → none |
| CON-LEG101-LR-4780 | Embankments to the parcels for roads [Local – 02 ] | 2026-08-06 → 2025-12-13 A (-236d) | 2026-08-22 → 2026-06-18 A (-65d) | 0% → 100% | 12d → none |
| CON-LEG101-LR-1630 | Excavation for Roadway [Local – 02 ] | 2026-03-16 → 2025-12-24 A (-82d) | 2026-04-13 → 2025-12-29 A (-105d) | 0% → 100% | 6d → none |
| CON-LEG101-LR-4310 | Embankments to the roads [Local – 02 ] | 2026-07-13 → 2025-12-29 A (-196d) | 2026-08-05 → 2026-01-03 A (-214d) | 0% → 100% | 12d → none |
| 2 | **Asphalt Work** | 2026-08-23 → 2026-01-12 (-223d) | 2026-09-16 → 2026-06-21 (-87d) |  |  |
| CON-LEG101-LR-5610 | Subgrade [Local – 02 ] | 2026-08-23 → 2026-01-12 A (-223d) | 2026-08-30 → 2026-01-25 A (-217d) | 0% → 100% | 12d → none |
| CON-LEG101-LR-5710 | Aggregate base course [Local – 02 ] | 2026-08-31 → 2026-06-09 A (-83d) | 2026-09-09 → 2026-06-18 A (-83d) | 0% → 100% | 12d → none |
| CON-LEG101-LR-5810 | Prime Coat (MC1) [Local – 02 ] | 2026-09-10 → 2026-06-11 A (-91d) | 2026-09-12 → 2026-06-20 A (-84d) | 0% → 100% | 12d → none |
| CON-LEG101-LR-5910 | Bituminous Base Course [Local – 02 ] | 2026-09-13 → 2026-06-15 A (-90d) | 2026-09-16 → 2026-06-21 A (-87d) | 0% → 100% | 13d → none |
| 8 | **Electrical Works** | 2026-06-23 → 2026-05-31 (-23d) | 2026-08-20 → 2027-05-03 (+256d) |  |  |
| 2 | **Medium Voltage** | 2026-06-23 → 2026-05-31 (-23d) | 2026-08-20 → 2027-05-03 (+256d) |  |  |
| CON-LEG101-LR-7000 | Installation of Medium Voltage Cables Duct Banks [Local – 02 ] | 2026-07-02 → 2026-05-31 A (-32d) | 2026-07-11 → 2026-06-09 A (-32d) | 0% → 100% | 12d → none |
| CON-LEG101-LR-6910 | Excavation for Medium Voltage trench [Local – 02 ] | 2026-06-23 → 2027-03-15 (+265d) | 2026-07-01 → 2027-03-23 (+265d) |  | 12d → -145d |
| CON-LEG101-LR-7090 | Installation of Medium Voltage Cables [Local – 02 ] | 2026-07-12 → 2027-03-24 (+255d) | 2026-07-26 → 2027-04-07 (+255d) |  | 12d → -145d |
| CON-LEG101-LR-7180 | Installation of Straight joints cables [Local – 02 ] | 2026-07-27 → 2027-04-08 (+255d) | 2026-08-02 → 2027-04-14 (+255d) |  | 12d → -145d |
| CON-LEG101-LR-7270 | Installation of Cable Termination for 13.8 kv 3Cx 500 mm², Al /XLPE/LLDPE [Local – 02 ] | 2026-08-03 → 2027-04-15 (+255d) | 2026-08-11 → 2027-04-24 (+256d) |  | 12d → -145d |
| CON-LEG101-LR-7360 | Installation of Medium Voltage Switchgears [Local – 02 ] | 2026-08-12 → 2027-04-25 (+256d) | 2026-08-17 → 2027-04-29 (+255d) |  | 12d → -145d |
| CON-LEG101-LR-7710 | Installation of Cable Termination [Local – 02 ] | 2026-08-18 → 2027-05-01 (+256d) | 2026-08-20 → 2027-05-03 (+256d) |  | 12d → -145d |
| 2 | **Local – 03** | 2026-04-14 → 2025-12-08 (-127d) | 2026-09-17 → 2027-05-31 (+256d) |  |  |
| 7 | **Road Works** | 2026-04-14 → 2025-12-08 (-127d) | 2026-09-17 → 2026-09-10 (-7d) |  |  |
| 1 | **Earthworks and Site Grading** | 2026-04-14 → 2025-12-08 (-127d) | 2026-09-02 → 2026-09-10 (+8d) |  |  |
| CON-LEG101-LR-3040 | Parcrels Excavation for Roadway [Local – 03 ] | 2026-07-13 → 2025-12-08 A (-217d) | 2026-07-28 → 2026-03-30 A (-120d) | 0% → 100% | 12d → none |
| CON-LEG101-LR-4820 | Embankments to the parcels for roads [Local – 03 ] | 2026-08-16 → 2025-12-13 A (-246d) | 2026-09-02 → 2026-09-10 A (+8d) | 0% → 100% | 12d → none |
| CON-LEG101-LR-1740 | Excavation for Roadway [Local – 03 ] | 2026-04-14 → 2026-01-05 A (-99d) | 2026-04-29 → 2026-01-08 A (-111d) | 0% → 100% | 11d → none |
| CON-LEG101-LR-4360 | Embankments to the roads [Local – 03 ] | 2026-07-29 → 2026-01-06 A (-204d) | 2026-08-15 → 2026-03-31 A (-137d) | 0% → 100% | 12d → none |
| 2 | **Asphalt Work** | 2026-09-03 → 2026-01-29 (-217d) | 2026-09-17 → 2026-08-04 (-44d) |  |  |
| CON-LEG101-LR-5620 | Subgrade [Local – 03 ] | 2026-09-03 → 2026-01-29 A (-217d) | 2026-09-07 → 2026-04-30 A (-130d) | 0% → 100% | 12d → none |
| CON-LEG101-LR-5720 | Aggregate base course [Local – 03 ] | 2026-09-08 → 2026-07-28 A (-42d) | 2026-09-12 → 2026-07-30 A (-44d) | 0% → 100% | 12d → none |
| CON-LEG101-LR-5820 | Prime Coat (MC1) [Local – 03 ] | 2026-09-13 → 2026-08-02 A (-42d) | 2026-09-14 → 2026-08-02 A (-43d) | 0% → 100% | 12d → none |
| CON-LEG101-LR-5920 | Bituminous Base Course [Local – 03 ] | 2026-09-15 → 2026-08-03 A (-43d) | 2026-09-17 → 2026-08-04 A (-44d) | 0% → 100% | 12d → none |
| 8 | **Electrical Works** | 2026-08-22 → 2026-04-21 (-123d) | 2026-09-17 → 2027-05-31 (+256d) |  |  |
| 2 | **Medium Voltage** | 2026-08-22 → 2026-04-21 (-123d) | 2026-09-17 → 2027-05-31 (+256d) |  |  |
| CON-LEG101-LR-7010 | Installation of Medium Voltage Cables Duct Banks [Local – 03 ] | 2026-08-25 → 2026-04-21 A (-126d) | 2026-08-29 → 2026-05-07 A (-114d) | 0% → 100% | 12d → none |
| CON-LEG101-LR-6920 | Excavation for Medium Voltage trench [Local – 03 ] | 2026-08-22 → 2027-05-04 (+255d) | 2026-08-24 → 2027-05-06 (+255d) |  | 12d → -145d |
| CON-LEG101-LR-7100 | Installation of Medium Voltage Cables [Local – 03 ] | 2026-08-30 → 2027-05-08 (+251d) | 2026-09-03 → 2027-05-12 (+251d) |  | 12d → -92.2d |
| CON-LEG101-LR-7190 | Installation of Straight joints cables [Local – 03 ] | 2026-09-05 → 2027-05-13 (+250d) | 2026-09-06 → 2027-05-19 (+255d) |  | 12d → -92.2d |
| CON-LEG101-LR-7280 | Installation of Cable Termination for 13.8 kv 3Cx 500 mm², Al /XLPE/LLDPE [Local – 03 ] | 2026-09-07 → 2027-05-20 (+255d) | 2026-09-09 → 2027-05-23 (+256d) |  | 12d → -92.2d |

| ID | Task | Start | Finish | Complete | Total float |
| --- | --- | --- | --- | --- | --- |
| CON-LEG101-LR-7370 | Installation of Medium Voltage Switchgears [Local – 03 ] | 2026-09-10 → 2027-05-24 (+256d) | 2026-09-14 → 2027-05-27 (+255d) |  | 12d → -92.2d |
| CON-LEG101-LR-7720 | Installation of Cable Termination [Local – 03 ] | 2026-09-15 → 2027-05-29 (+256d) | 2026-09-17 → 2027-05-31 (+256d) |  | 12d → -92.2d |
| 3 | **Local – 04** | 2026-04-30 → 2025-12-10 (-141d) | 2026-09-17 → 2027-06-05 (+261d) |  |  |
| 7 | **Road Works** | 2026-04-30 → 2025-12-10 (-141d) | 2026-09-17 → 2027-01-03 (+108d) |  |  |
| 1 | **Earthworks and Site Grading** | 2026-04-30 → 2025-12-10 (-141d) | 2026-07-30 → 2026-12-05 (+128d) |  |  |
| CON-LEG101-LR-3130 | Parcrels Excavation for Roadway [Local – 04 ] | 2026-05-18 → 2025-12-10 A (-159d) | 2026-06-11 → 2026-09-17 A (+98d) | 0% → 100% | 12d → none |
| CON-LEG101-LR-4860 | Embankments to the parcels for roads [Local – 04 ] | 2026-07-07 → 2025-12-14 A (-205d) | 2026-07-30 → 2026-09-19 A (+51d) | 0% → 100% | 12d → none |
| CON-LEG101-LR-1800 | Excavation for Roadway [Local – 04 ] | 2026-04-30 → 2026-10-25 (+178d) | 2026-05-17 → 2026-11-10 (+177d) |  | 12d → -42.24d |
| CON-LEG101-LR-4420 | Embankments to the roads [Local – 04 ] | 2026-06-13 → 2026-11-11 (+151d) | 2026-07-06 → 2026-12-05 (+152d) |  | 12d → 26.8d |
| 2 | **Asphalt Work** | 2026-08-20 → 2026-12-06 (+108d) | 2026-09-17 → 2027-01-03 (+108d) |  |  |
| CON-LEG101-LR-5630 | Subgrade [Local – 04 ] | 2026-08-20 → 2026-12-06 (+108d) | 2026-09-02 → 2026-12-19 (+108d) |  | 13d → 26.8d |
| CON-LEG101-LR-5730 | Aggregate base course [Local – 04 ] | 2026-09-05 → 2026-12-21 (+107d) | 2026-09-13 → 2026-12-29 (+107d) |  | 12d → 25.8d |
| CON-LEG101-LR-5830 | Prime Coat (MC1) [Local – 04 ] | 2026-09-14 → 2026-12-30 (+107d) | 2026-09-15 → 2026-12-31 (+107d) |  | 12d → 25.8d |
| CON-LEG101-LR-5930 | Bituminous Base Course [Local – 04 ] | 2026-09-16 → 2027-01-02 (+108d) | 2026-09-17 → 2027-01-03 (+108d) |  | 12d → 25.8d |
| 1 | **Electric Works** | 2026-08-22 → 2027-05-04 (+255d) | 2026-09-17 → 2027-06-05 (+261d) |  |  |
| 2 | **Medium Voltage** | 2026-08-22 → 2027-05-04 (+255d) | 2026-09-17 → 2027-06-05 (+261d) |  |  |
| CON-LEG101-LR-6930 | Excavation for Medium Voltage trench [Local – 04 ] | 2026-08-22 → 2027-05-04 (+255d) | 2026-08-25 → 2027-05-08 (+256d) |  | 12d → -145d |
| CON-LEG101-LR-7020 | Installation of Medium Voltage Cables Duct Banks [Local – 04 ] | 2026-08-26 → 2027-05-09 (+256d) | 2026-08-29 → 2027-05-11 (+255d) |  | 12d → -96.2d |
| CON-LEG101-LR-7110 | Installation of Medium Voltage Cables [Local – 04 ] | 2026-08-30 → 2027-05-12 (+255d) | 2026-09-05 → 2027-05-23 (+260d) |  | 12d → -96.2d |
| CON-LEG101-LR-7200 | Installation of Straight joints cables [Local – 04 ] | 2026-09-06 → 2027-05-24 (+260d) | 2026-09-08 → 2027-05-26 (+260d) |  | 12d → -96.2d |
| CON-LEG101-LR-7290 | Installation of Cable Termination for 13.8 kv 3Cx 500 mm², Al /XLPE/LLDPE [Local – 04 ] | 2026-09-09 → 2027-05-27 (+260d) | 2026-09-12 → 2027-05-30 (+260d) |  | 12d → -96.2d |
| CON-LEG101-LR-7380 | Installation of Medium Voltage Switchgears [Local – 04 ] | 2026-09-13 → 2027-05-31 (+260d) | 2026-09-14 → 2027-06-01 (+260d) |  | 12d → -96.2d |
| CON-LEG101-LR-7730 | Installation of Cable Termination [Local – 04 ] | 2026-09-15 → 2027-06-02 (+260d) | 2026-09-17 → 2027-06-05 (+261d) |  | 12d → -96.2d |
| 5 | **Local – 05** | 2026-05-18 → 2025-12-04 (-165d) | 2026-09-17 → 2027-05-30 (+255d) |  |  |
| 7 | **Road Works** | 2026-05-18 → 2025-12-04 (-165d) | 2026-09-17 → 2026-09-09 (-8d) |  |  |
| 1 | **Earthworks and Site Grading** | 2026-05-18 → 2025-12-04 (-165d) | 2026-08-17 → 2026-09-09 (+23d) |  |  |
| CON-LEG101-LR-3190 | Parcrels Excavation for Roadway [Local – 05 ] | 2026-06-16 → 2025-12-04 A (-194d) | 2026-07-09 → 2026-09-09 A (+62d) | 0% → 100% | 12d → none |
| CON-LEG101-LR-4930 | Embankments to the parcels for roads [Local – 05 ] | 2026-08-01 → 2025-12-07 A (-237d) | 2026-08-17 → 2026-07-09 A (-39d) | 0% → 100% | 12d → none |
| CON-LEG101-LR-1900 | Excavation for Roadway [Local – 05 ] | 2026-05-18 → 2025-12-30 A (-139d) | 2026-06-15 → 2026-01-01 A (-165d) | 0% → 100% | 12d → none |
| CON-LEG101-LR-4520 | Embankments to the roads [Local – 05 ] | 2026-07-11 → 2026-01-03 A (-189d) | 2026-07-30 → 2026-01-20 A (-191d) | 0% → 100% | 12d → none |
| 2 | **Asphalt Work** | 2026-08-30 → 2026-01-12 (-230d) | 2026-09-17 → 2026-06-23 (-86d) |  |  |
| CON-LEG101-LR-5640 | Subgrade [Local – 05 ] | 2026-08-30 → 2026-01-12 A (-230d) | 2026-09-09 → 2026-02-10 A (-211d) | 0% → 100% | 13d → none |
| CON-LEG101-LR-5740 | Aggregate base course [Local – 05 ] | 2026-09-12 → 2026-05-31 A (-104d) | 2026-09-15 → 2026-06-21 A (-86d) | 0% → 100% | 12d → none |
| CON-LEG101-LR-5840 | Prime Coat (MC1) [Local – 05 ] | 2026-09-16 → 2026-06-11 A (-97d) | 2026-09-17 → 2026-06-22 A (-87d) | 0% → 100% | 12d → none |
| CON-LEG101-LR-5940 | Bituminous Base Course [Local – 05 ] | 2026-09-16 → 2026-06-15 A (-93d) | 2026-09-17 → 2026-06-23 A (-86d) | 0% → 100% | 12d → none |
| 8 | **Electrical Works** | 2026-08-30 → 2026-05-02 (-120d) | 2026-09-17 → 2027-05-30 (+255d) |  |  |
| 2 | **Medium Voltage** | 2026-08-30 → 2026-05-02 (-120d) | 2026-09-17 → 2027-05-30 (+255d) |  |  |
| CON-LEG101-LR-7030 | Installation of Medium Voltage Cables Duct Banks [Local – 05 ] | 2026-09-03 → 2026-05-02 A (-124d) | 2026-09-05 → 2026-05-07 A (-121d) | 0% → 100% | 12d → none |
| CON-LEG101-LR-6940 | Excavation for Medium Voltage trench [Local – 05 ] | 2026-08-30 → 2027-05-09 (+252d) | 2026-09-02 → 2027-05-12 (+252d) |  | 12d → -91.2d |
| CON-LEG101-LR-7120 | Installation of Medium Voltage Cables [Local – 05 ] | 2026-09-06 → 2027-05-13 (+249d) | 2026-09-09 → 2027-05-22 (+255d) |  | 12d → -91.2d |
| CON-LEG101-LR-7210 | Installation of Straight joints cables [Local – 05 ] | 2026-09-10 → 2027-05-23 (+255d) | 2026-09-12 → 2027-05-24 (+254d) |  | 12d → -91.2d |
| CON-LEG101-LR-7300 | Installation of Cable Termination for 13.8 kv 3Cx 500 mm², Al /XLPE/LLDPE [Local – 05 ] | 2026-09-13 → 2027-05-25 (+254d) | 2026-09-14 → 2027-05-26 (+254d) |  | 12d → -91.2d |
| CON-LEG101-LR-7390 | Installation of Medium Voltage Switchgears [Local – 05 ] | 2026-09-15 → 2027-05-27 (+254d) | 2026-09-16 → 2027-05-29 (+255d) |  | 12d → -91.2d |
| CON-LEG101-LR-7740 | Installation of Cable Termination [Local – 05 ] | 2026-09-15 → 2027-05-27 (+254d) | 2026-09-17 → 2027-05-30 (+255d) |  | 12d → -91.2d |
| 6 | **Local – 06** | 2026-06-16 → 2025-12-08 (-190d) | 2026-09-17 → 2027-05-29 (+254d) |  |  |
| 7 | **Road Works** | 2026-06-16 → 2025-12-08 (-190d) | 2026-09-17 → 2026-08-20 (-28d) |  |  |
| 1 | **Earthworks and Site Grading** | 2026-06-16 → 2025-12-08 (-190d) | 2026-08-31 → 2026-08-20 (-11d) |  |  |
| CON-LEG101-LR-3290 | Parcrels Excavation for Roadway [Local – 06 ] | 2026-07-02 → 2025-12-08 A (-206d) | 2026-07-25 → 2026-08-19 A (+25d) | 0% → 100% | 12d → none |
| CON-LEG101-LR-5000 | Embankments to the parcels for roads [Local – 06 ] | 2026-08-18 → 2025-12-14 A (-247d) | 2026-08-31 → 2026-08-20 A (-11d) | 0% → 100% | 12d → none |
| CON-LEG101-LR-1990 | Excavation for Roadway [Local – 06 ] | 2026-06-16 → 2025-12-29 A (-169d) | 2026-07-01 → 2026-01-05 A (-177d) | 0% → 100% | 12d → none |
| CON-LEG101-LR-4540 | Embankments to the roads [Local – 06 ] | 2026-07-26 → 2025-12-31 A (-207d) | 2026-08-17 → 2026-01-01 A (-228d) | 0% → 100% | 12d → none |
| 2 | **Asphalt Work** | 2026-09-01 → 2026-01-13 (-231d) | 2026-09-17 → 2026-07-06 (-73d) |  |  |
| CON-LEG101-LR-5650 | Subgrade [Local – 06 ] | 2026-09-01 → 2026-01-13 A (-231d) | 2026-09-07 → 2026-01-25 A (-225d) | 0% → 100% | 12d → none |
| CON-LEG101-LR-5750 | Aggregate base course [Local – 06 ] | 2026-09-08 → 2026-06-27 A (-73d) | 2026-09-12 → 2026-06-29 A (-75d) | 0% → 100% | 12d → none |
| CON-LEG101-LR-5850 | Prime Coat (MC1) [Local – 06 ] | 2026-09-13 → 2026-07-01 A (-74d) | 2026-09-14 → 2026-07-02 A (-74d) | 0% → 100% | 12d → none |
| CON-LEG101-LR-5950 | Bituminous Base Course [Local – 06 ] | 2026-09-15 → 2026-07-04 A (-73d) | 2026-09-17 → 2026-07-06 A (-73d) | 0% → 100% | 12d → none |
| 8 | **Electrical Works** | 2026-08-31 → 2026-06-17 (-75d) | 2026-09-17 → 2027-05-29 (+254d) |  |  |
| 2 | **Medium Voltage** | 2026-08-31 → 2026-06-17 (-75d) | 2026-09-17 → 2027-05-29 (+254d) |  |  |
| CON-LEG101-LR-7040 | Installation of Medium Voltage Cables Duct Banks [Local – 06 ] | 2026-09-03 → 2026-06-17 A (-78d) | 2026-09-06 → 2026-06-18 A (-80d) | 0% → 100% | 12d → none |
| CON-LEG101-LR-6950 | Excavation for Medium Voltage trench [Local – 06 ] | 2026-08-31 → 2027-05-10 (+252d) | 2026-09-02 → 2027-05-12 (+252d) |  | 12d → -90.2d |
| CON-LEG101-LR-7130 | Installation of Medium Voltage Cables [Local – 06 ] | 2026-09-07 → 2027-05-13 (+248d) | 2026-09-09 → 2027-05-20 (+253d) |  | 12d → -90.2d |
| CON-LEG101-LR-7220 | Installation of Straight joints cables [Local – 06 ] | 2026-09-10 → 2027-05-22 (+254d) | 2026-09-12 → 2027-05-23 (+253d) |  | 12d → -90.2d |
| CON-LEG101-LR-7310 | Installation of Cable Termination for 13.8 kv 3Cx 500 mm², Al /XLPE/LLDPE [Local – 06 ] | 2026-09-13 → 2027-05-24 (+253d) | 2026-09-14 → 2027-05-25 (+253d) |  | 12d → -90.2d |
| CON-LEG101-LR-7400 | Installation of Medium Voltage Switchgears [Local – 06 ] | 2026-09-15 → 2027-05-26 (+253d) | 2026-09-16 → 2027-05-27 (+253d) |  | 12d → -90.2d |
| CON-LEG101-LR-7750 | Installation of Cable Termination [Local – 06 ] | 2026-09-15 → 2027-05-26 (+253d) | 2026-09-17 → 2027-05-29 (+254d) |  | 12d → -90.2d |
| 7 | **Local – 07** | 2026-07-02 → 2025-12-07 (-207d) | 2026-09-17 → 2027-05-27 (+252d) |  |  |
| 7 | **Road Works** | 2026-07-02 → 2025-12-07 (-207d) | 2026-09-17 → 2026-11-11 (+55d) |  |  |
| 1 | **Earthworks and Site Grading** | 2026-07-02 → 2025-12-07 (-207d) | 2026-08-31 → 2026-11-11 (+72d) |  |  |
| CON-LEG101-LR-3380 | Parcrels Excavation for Roadway [Local – 07 ] | 2026-07-14 → 2025-12-07 A (-219d) | 2026-07-29 → 2025-12-10 A (-231d) | 0% → 100% | 12d → none |
| CON-LEG101-LR-5070 | Embankments to the parcels for roads [Local – 07 ] | 2026-08-16 → 2025-12-11 A (-248d) | 2026-08-31 → 2026-11-11 (+72d) | 0% → 98% | 12d → 71.52d |

| ID | Task | Start | Finish | Complete | Total float |
| --- | --- | --- | --- | --- | --- |
| CON-LEG101-LR-2080 | Excavation for Roadway [Local – 07 ] | 2026-07-02 → 2026-01-01 A (-182d) | 2026-07-13 → 2026-01-07 A (-187d) | 0% → 100% | 12d → none |
| CON-LEG101-LR-4550 | Embankments to the roads [Local – 07 ] | 2026-07-30 → 2026-01-08 A (-203d) | 2026-08-15 → 2026-01-24 A (-203d) | 0% → 100% | 12d → none |
| 2 | **Asphalt Work** | 2026-09-01 → 2026-01-24 (-220d) | 2026-09-17 → 2026-06-30 (-79d) |  |  |
| CON-LEG101-LR-5660 | Subgrade [Local – 07 ] | 2026-09-01 → 2026-01-24 A (-220d) | 2026-09-06 → 2026-01-26 A (-223d) | 0% → 100% | 12d → none |
| CON-LEG101-LR-5760 | Aggregate base course [Local – 07 ] | 2026-09-07 → 2026-06-21 A (-78d) | 2026-09-10 → 2026-06-23 A (-79d) | 0% → 100% | 12d → none |
| CON-LEG101-LR-5860 | Prime Coat (MC1) [Local – 07 ] | 2026-09-12 → 2026-06-27 A (-77d) | 2026-09-14 → 2026-06-28 A (-78d) | 0% → 100% | 12d → none |
| CON-LEG101-LR-5960 | Bituminous Base Course [Local – 07 ] | 2026-09-15 → 2026-06-27 A (-80d) | 2026-09-17 → 2026-06-30 A (-79d) | 0% → 100% | 12d → none |
| 8 | **Electrical Works** | 2026-09-01 → 2026-05-20 (-104d) | 2026-09-17 → 2027-05-27 (+252d) |  |  |
| 2 | **Medium Voltage** | 2026-09-01 → 2026-05-20 (-104d) | 2026-09-17 → 2027-05-27 (+252d) |  |  |
| CON-LEG101-LR-7050 | Installation of Medium Voltage Cables Duct Banks [Local – 07 ] | 2026-09-05 → 2026-05-20 A (-108d) | 2026-09-07 → 2026-05-21 A (-109d) | 0% → 100% | 12d → none |
| CON-LEG101-LR-6960 | Excavation for Medium Voltage trench [Local – 07 ] | 2026-09-01 → 2027-05-10 (+251d) | 2026-09-03 → 2027-05-12 (+251d) |  | 12d → -89.2d |
| CON-LEG101-LR-7140 | Installation of Medium Voltage Cables [Local – 07 ] | 2026-09-08 → 2027-05-13 (+247d) | 2026-09-10 → 2027-05-20 (+252d) |  | 12d → -89.2d |
| CON-LEG101-LR-7230 | Installation of Straight joints cables [Local – 07 ] | 2026-09-12 → 2027-05-22 (+252d) | 2026-09-13 → 2027-05-23 (+252d) |  | 12d → -89.2d |
| CON-LEG101-LR-7320 | Installation of Cable Termination for 13.8 kv 3Cx 500 mm², Al /XLPE/LLDPE [Local – 07 ] | 2026-09-14 → 2027-05-24 (+252d) | 2026-09-15 → 2027-05-25 (+252d) |  | 12d → -89.2d |
| CON-LEG101-LR-7410 | Installation of Medium Voltage Switchgears [Local – 07 ] | 2026-09-16 → 2027-05-26 (+252d) | 2026-09-17 → 2027-05-27 (+252d) |  | 12d → -89.2d |
| CON-LEG101-LR-7760 | Installation of Cable Termination [Local – 07 ] | 2026-09-16 → 2027-05-26 (+252d) | 2026-09-17 → 2027-05-27 (+252d) |  | 12d → -89.2d |
| 8 | **Local – 08** | 2026-06-03 → 2025-12-23 (-162d) | 2026-09-17 → 2026-08-03 (-45d) |  |  |
| 7 | **Road Works** | 2026-06-03 → 2025-12-23 (-162d) | 2026-09-17 → 2026-08-03 (-45d) |  |  |
| 1 | **Earthworks and Site Grading** | 2026-06-03 → 2025-12-23 (-162d) | 2026-08-31 → 2026-07-21 (-41d) |  |  |
| CON-LEG101-LR-3470 | Parcrels Excavation for Roadway [Local – 08 ] | 2026-07-30 → 2025-12-23 A (-219d) | 2026-08-10 → 2026-07-20 A (-21d) | 0% → 100% | 12d → none |
| CON-LEG101-LR-4560 | Embankments to the roads [Local – 08 ] | 2026-08-11 → 2026-04-05 A (-128d) | 2026-08-19 → 2026-04-27 A (-114d) | 0% → 100% | 12d → none |
| CON-LEG101-LR-5140 | Embankments to the parcels for roads [Local – 08 ] | 2026-08-20 → 2026-04-05 A (-137d) | 2026-08-31 → 2026-07-21 A (-41d) | 0% → 100% | 12d → none |
| CON-LEG101-LR-2180 | Excavation for Roadway [Local – 08 ] | 2026-06-03 → 2026-04-07 A (-57d) | 2026-06-14 → 2026-04-26 A (-49d) | 0% → 100% | 12d → none |
| 2 | **Asphalt Work** | 2026-09-01 → 2026-06-17 (-76d) | 2026-09-17 → 2026-08-03 (-45d) |  |  |
| CON-LEG101-LR-5670 | Subgrade [Local – 08 ] | 2026-09-01 → 2026-06-17 A (-76d) | 2026-09-08 → 2026-06-30 A (-70d) | 0% → 100% | 12d → none |
| CON-LEG101-LR-5770 | Aggregate base course [Local – 08 ] | 2026-09-09 → 2026-07-25 A (-46d) | 2026-09-13 → 2026-07-28 A (-47d) | 0% → 100% | 12d → none |
| CON-LEG101-LR-5870 | Prime Coat (MC1) [Local – 08 ] | 2026-09-14 → 2026-08-01 A (-44d) | 2026-09-15 → 2026-08-01 A (-45d) | 0% → 100% | 12d → none |
| CON-LEG101-LR-5970 | Bituminous Base Course [Local – 08 ] | 2026-09-16 → 2026-08-02 A (-45d) | 2026-09-17 → 2026-08-03 A (-45d) | 0% → 100% | 12d → none |
| 6 | **Deep Infrastructure network** | 2026-04-01 → 2025-12-27 (-95d) | 2026-11-18 → 2027-01-04 (+47d) |  |  |
| 1 | **Local – 01** | 2026-04-01 → 2025-12-27 (-95d) | 2026-08-22 → 2026-11-02 (+72d) |  |  |
| 1 | **LOCAL - 01 Segment-01 (From 0+000 to 1+066)** | 2026-04-01 → 2025-12-27 (-95d) | 2026-08-03 → 2026-11-01 (+90d) |  |  |
| 1 | **Stormwater Utilities** | 2026-04-01 → 2025-12-27 (-95d) | 2026-08-03 → 2026-11-01 (+90d) |  |  |
| 2 | **Pipe Work** | 2026-04-01 → 2025-12-27 (-95d) | 2026-06-08 → 2026-03-17 (-83d) |  |  |
| CON-LEG101-LR-3580 | Excavation for Stormwater Utilities Network [Local – 01 Segment-01] | 2026-04-01 → 2025-12-27 A (-95d) | 2026-04-12 → 2026-01-22 A (-80d) | 0% → 100% | 7d → none |
| CON-LEG101-LR-3680 | Granular bedding for Stormwater Utilities Network [Local – 01 Segment-01] | 2026-04-13 → 2025-12-28 A (-106d) | 2026-04-23 → 2026-01-24 A (-89d) | 0% → 100% | 20d → none |
| CON-LEG101-LR-3780 | Installation of Pipe for Stormwater Utilities Network [Local – 01 Segment-01] | 2026-05-05 → 2025-12-30 A (-126d) | 2026-05-16 → 2026-01-28 A (-108d) | 0% → 100% | 11d → none |
| CON-LEG101-LR-3980 | Granular Surround for Stormwater Utilities Network [Local – 01 Segment-01] | 2026-05-21 → 2025-12-31 A (-141d) | 2026-05-25 → 2026-01-29 A (-116d) | 0% → 100% | 15d → none |
| CON-LEG101-LR-3880 | Testing for Stormwater Utilities Network [Local – 01 Segment-01] | 2026-05-17 → 2026-01-02 A (-135d) | 2026-05-20 → 2026-03-12 A (-69d) | 0% → 100% | 15d → none |
| CON-LEG101-LR-4090 | Installation of Micron Marker Magnetic Tape [Local – 01 Segment-01] | 2026-05-26 → 2026-01-12 A (-134d) | 2026-06-01 → 2026-03-15 A (-78d) | 0% → 100% | 15d → none |
| CON-LEG101-LR-4200 | Backfilling to Subgrade Elevation [Local – 01 Segment-01] | 2026-06-02 → 2026-01-13 A (-140d) | 2026-06-08 → 2026-03-17 A (-83d) | 0% → 100% | 15d → none |
| 1 | **Manhole** | 2026-04-13 → 2025-12-27 (-107d) | 2026-06-30 → 2026-10-27 (+119d) |  |  |
| CON-LEG101-LR-10890 | Excavation of Inlet Manholes [Local – 01 Segment-01] | 2026-04-13 → 2025-12-27 A (-107d) | 2026-04-29 → 2026-01-22 A (-97d) | 0% → 100% | 19d → none |
| CON-LEG101-LR-10900 | PC of Inlet Manholes [Local – 01 Segment-01] | 2026-04-30 → 2026-01-14 A (-106d) | 2026-05-06 → 2026-01-25 A (-101d) | 0% → 100% | 19d → none |
| CON-LEG101-LR-4320 | Installation of Inlet Manholes [Local – 01 Segment-01] | 2026-05-17 → 2026-01-17 A (-120d) | 2026-06-06 → 2026-04-26 A (-41d) | 0% → 100% | 11d → none |
| CON-LEG101-LR-10910 | Backfilling of Inlet Manholes [Local – 01 Segment-01] | 2026-06-07 → 2026-03-24 A (-75d) | 2026-06-13 → 2026-04-28 A (-46d) | 0% → 100% | 11d → none |
| CON-LEG101-LR-10920 | Finishing and Testing of Inlet Manholes [Local – 01 Segment-01] | 2026-06-14 → 2026-03-28 A (-78d) | 2026-06-30 → 2026-10-27 (+119d) | 0% → 80% | 17d → 83.75d |
| 3 | **Concrete Chambers/Outfalls** | 2026-06-14 → 2026-03-26 (-80d) | 2026-08-03 → 2026-11-01 (+90d) |  |  |
| CON-LEG101-LR-10840 | Excavation of Concrete chambers [Local – 01 Segment-01] | 2026-06-14 → 2026-03-26 A (-80d) | 2026-06-20 → 2026-04-09 A (-72d) | 0% → 100% | 12d → none |
| CON-LEG101-LR-10850 | PC of Concrete chambers [Local – 01 Segment-01] | 2026-06-21 → 2026-04-01 A (-81d) | 2026-06-22 → 2026-04-12 A (-71d) | 0% → 100% | 12d → none |
| CON-LEG101-LR-10870 | Installation UPVC Pipes to Concrete chambers [Local – 01 Segment-01] | 2026-07-07 → 2026-04-02 A (-96d) | 2026-07-15 → 2026-04-21 A (-85d) | 0% → 100% | 12d → none |
| CON-LEG101-LR-4430 | Installation of Concrete chambers [Local – 01 Segment-01] | 2026-06-23 → 2026-04-13 A (-71d) | 2026-07-06 → 2026-04-21 A (-76d) | 0% → 100% | 12d → none |
| CON-LEG101-LR-10860 | Backfilling to Concrete chambers [Local – 01 Segment-01] | 2026-07-16 → 2026-04-22 A (-85d) | 2026-07-22 → 2026-04-25 A (-88d) | 0% → 100% | 12d → none |
| CON-LEG101-LR-10880 | FInishing and Testing of Concrete chambers [Local – 01 Segment-01] | 2026-07-23 → 2026-07-01 A (-22d) | 2026-08-03 → 2026-11-01 (+90d) | 0% → 60% | 14d → 83.75d |
| 4 | **Sanitary Sewerage** | 2026-04-13 → 2026-01-12 (-91d) | 2026-06-15 → 2026-10-25 (+132d) |  |  |
| 2 | **Pipe Work** | 2026-04-13 → 2026-01-12 (-91d) | 2026-06-15 → 2026-03-07 (-100d) |  |  |
| CON-LEG101-LR-2780 | Excavation for Sanitary Sewerage Network [Local – 01 Segment-01] | 2026-04-13 → 2026-01-12 A (-91d) | 2026-04-23 → 2026-01-24 A (-89d) | 0% → 100% | 15d → none |
| CON-LEG101-LR-2870 | Granular bedding for Sanitary Sewerage Network [Local – 01 Segment-01] | 2026-04-25 → 2026-01-13 A (-102d) | 2026-04-28 → 2026-01-24 A (-94d) | 0% → 100% | 15d → none |
| CON-LEG101-LR-2960 | Installation of Pipe for Sanitary Sewerage Network [Local – 01 Segment-01] | 2026-05-06 → 2026-01-15 A (-111d) | 2026-05-17 → 2026-01-28 A (-109d) | 0% → 100% | 9d → none |
| CON-LEG101-LR-3230 | Granular Surround for Sanitary Sewerage Network [Local – 01 Segment-01] | 2026-05-26 → 2026-01-18 A (-128d) | 2026-06-03 → 2026-01-29 A (-125d) | 0% → 100% | 9d → none |
| CON-LEG101-LR-3140 | Concrete encasement, pipe dia 200 and 350 mm [Local – 01 Segment-01] | 2026-05-23 → 2026-02-01 A (-111d) | 2026-05-25 → 2026-02-02 A (-112d) | 0% → 100% | 9d → none |
| CON-LEG101-LR-3050 | Testing for Sanitary Sewerage Network [Local – 01 Segment-01] | 2026-05-18 → 2026-03-01 A (-78d) | 2026-05-21 → 2026-03-03 A (-79d) | 0% → 100% | 9d → none |
| CON-LEG101-LR-3320 | Installation of Micron Marker Magnetic Tape [Local – 01 Segment-01] | 2026-06-04 → 2026-03-04 A (-92d) | 2026-06-06 → 2026-03-05 A (-93d) | 0% → 100% | 9d → none |
| CON-LEG101-LR-3410 | Backfilling to Subgrade Elevation [Local – 01 Segment-01] | 2026-06-07 → 2026-03-04 A (-95d) | 2026-06-15 → 2026-03-07 A (-100d) | 0% → 100% | 9d → none |
| 1 | **Manhole** | 2026-05-18 → 2026-01-13 (-125d) | 2026-06-14 → 2026-10-25 (+133d) |  |  |
| CON-LEG101-LR-3500 | Installation of Fiberglass Manholes [Local – 01 Segment-01] | 2026-05-18 → 2026-01-13 A (-125d) | 2026-06-14 → 2026-10-25 (+133d) | 0% → 95% | 14d → 34.8d |
| 2 | **LOCAL - 01 Segment-02 (From 1+066 to 2+133)** | 2026-04-27 → 2026-01-21 (-96d) | 2026-08-15 → 2026-11-02 (+79d) |  |  |
| 1 | **Stormwater Utilities** | 2026-04-27 → 2026-01-21 (-96d) | 2026-08-15 → 2026-11-02 (+79d) |  |  |
| 2 | **Pipe Work** | 2026-04-27 → 2026-01-21 (-96d) | 2026-06-14 → 2026-05-14 (-31d) |  |  |
| CON-LEG101-LR-3590 | Excavation for Stormwater Utilities Network [Local – 01 Segment-02] | 2026-04-27 → 2026-01-21 A (-96d) | 2026-05-07 → 2026-02-10 A (-86d) | 0% → 100% | 0d → none |
| CON-LEG101-LR-3690 | Granular bedding for Stormwater Utilities Network [Local – 01 Segment-02] | 2026-05-09 → 2026-01-24 A (-105d) | 2026-05-12 → 2026-02-12 A (-89d) | 0% → 100% | 6d → none |

| ID | Task | Start | Finish | Complete | Total float |
| --- | --- | --- | --- | --- | --- |
| CON-LEG101-LR-3790 | Installation of Pipe for Stormwater Utilities Network [Local – 01 Segment-02] | 2026-05-13 → 2026-01-28 A (-105d) | 2026-05-21 → 2026-04-09 A (-42d) | 0% → 100% | 6d → none |
| CON-LEG101-LR-3990 | Granular Surround for Stormwater Utilities Network [Local – 01 Segment-02] | 2026-06-01 → 2026-01-29 A (-123d) | 2026-06-04 → 2026-04-11 A (-54d) | 0% → 100% | 6d → none |
| CON-LEG101-LR-3890 | Testing for Stormwater Utilities Network [Local – 01 Segment-02] | 2026-05-23 → 2026-03-01 A (-83d) | 2026-05-26 → 2026-05-12 A (-14d) | 0% → 100% | 6d → none |
| CON-LEG101-LR-4100 | Installation of Micron Marker Magnetic Tape [Local – 01 Segment-02] | 2026-06-06 → 2026-03-11 A (-87d) | 2026-06-07 → 2026-05-13 A (-25d) | 0% → 100% | 6d → none |
| CON-LEG101-LR-4210 | Backfilling to Subgrade Elevation [Local – 01 Segment-02] | 2026-06-08 → 2026-03-12 A (-88d) | 2026-06-14 → 2026-05-14 A (-31d) | 0% → 100% | 6d → none |
| 1 | **Manhole** | 2026-05-09 → 2026-01-21 (-108d) | 2026-06-28 → 2026-08-24 (+57d) |  |  |
| CON-LEG101-LR-10930 | Excavation of Inlet Manholes [Local – 01 Segment-02] | 2026-05-09 → 2026-01-21 A (-108d) | 2026-05-14 → 2026-03-10 A (-65d) | 0% → 100% | 9d → none |
| CON-LEG101-LR-10940 | PC of Inlet Manholes [Local – 01 Segment-02] | 2026-05-16 → 2026-02-11 A (-94d) | 2026-05-18 → 2026-03-25 A (-54d) | 0% → 100% | 9d → none |
| CON-LEG101-LR-4330 | Installation of Inlet Manholes [Local – 01 Segment-02] | 2026-05-23 → 2026-02-15 A (-97d) | 2026-06-07 → 2026-04-30 A (-38d) | 0% → 100% | 6d → none |
| CON-LEG101-LR-10960 | Backfilling of Inlet Manholes [Local – 01 Segment-02] | 2026-06-08 → 2026-03-26 A (-74d) | 2026-06-14 → 2026-04-27 A (-48d) | 0% → 100% | 6d → none |
| CON-LEG101-LR-10970 | Finishing and Testing of Inlet Manholes [Local – 01 Segment-02] | 2026-06-15 → 2026-03-28 A (-79d) | 2026-06-28 → 2026-08-24 A (+57d) | 0% → 100% | 15d → none |
| 3 | **Concrete Chambers/Outfalls** | 2026-06-15 → 2026-04-14 (-62d) | 2026-08-15 → 2026-11-02 (+79d) |  |  |
| CON-LEG101-LR-10980 | Excavation of Concrete chambers [Local – 01 Segment-02] | 2026-06-15 → 2026-04-14 A (-62d) | 2026-06-25 → 2026-04-29 A (-57d) | 0% → 100% | 12d → none |
| CON-LEG101-LR-10990 | PC of Concrete chambers [Local – 01 Segment-02] | 2026-06-27 → 2026-04-20 A (-68d) | 2026-06-28 → 2026-04-30 A (-59d) | 0% → 100% | 12d → none |
| CON-LEG101-LR-11010 | Installation UPVC Pipes to Concrete chambers [Local – 01 Segment-02] | 2026-07-16 → 2026-04-21 A (-86d) | 2026-07-25 → 2026-05-05 A (-81d) | 0% → 100% | 12d → none |
| CON-LEG101-LR-4440 | Installation of Concrete chambers [Local – 01 Segment-02] | 2026-06-29 → 2026-04-21 A (-69d) | 2026-07-15 → 2026-05-05 A (-71d) | 0% → 100% | 12d → none |
| CON-LEG101-LR-11020 | Backfilling to Concrete chambers [Local – 01 Segment-02] | 2026-07-26 → 2026-04-25 A (-92d) | 2026-08-01 → 2026-05-07 A (-86d) | 0% → 100% | 12d → none |
| CON-LEG101-LR-11030 | FInishing and Testing of Concrete chambers [Local – 01 Segment-02] | 2026-08-04 → 2026-07-04 A (-31d) | 2026-08-15 → 2026-11-02 (+79d) | 0% → 95% | 14d → 83.75d |
| 4 | **Sanitary Sewerage** | 2026-04-27 → 2026-03-11 (-47d) | 2026-06-16 → 2026-10-25 (+131d) |  |  |
| 2 | **Pipe Work** | 2026-04-27 → 2026-03-11 (-47d) | 2026-06-14 → 2026-05-09 (-36d) |  |  |
| CON-LEG101-LR-2790 | Excavation for Sanitary Sewerage Network [Local – 01 Segment-02] | 2026-04-27 → 2026-03-11 A (-47d) | 2026-05-04 → 2026-04-07 A (-27d) | 0% → 100% | 6d → none |
| CON-LEG101-LR-2880 | Granular bedding for Sanitary Sewerage Network [Local – 01 Segment-02] | 2026-05-05 → 2026-03-17 A (-49d) | 2026-05-09 → 2026-04-08 A (-31d) | 0% → 100% | 6d → none |
| CON-LEG101-LR-2970 | Installation of Pipe for Sanitary Sewerage Network [Local – 01 Segment-02] | 2026-05-10 → 2026-03-24 A (-47d) | 2026-05-18 → 2026-04-09 A (-39d) | 0% → 100% | 6d → none |
| CON-LEG101-LR-3060 | Testing for Sanitary Sewerage Network [Local – 01 Segment-02] | 2026-05-19 → 2026-04-01 A (-48d) | 2026-05-23 → 2026-05-06 A (-17d) | 0% → 100% | 6d → none |
| CON-LEG101-LR-3150 | Concrete encasement, pipe dia 200 and 350 mm [Local – 01 Segment-02] | 2026-05-24 → 2026-04-02 A (-52d) | 2026-05-26 → 2026-04-11 A (-45d) | 0% → 100% | 6d → none |
| CON-LEG101-LR-3240 | Granular Surround for Sanitary Sewerage Network [Local – 01 Segment-02] | 2026-06-01 → 2026-04-04 A (-58d) | 2026-06-04 → 2026-04-11 A (-54d) | 0% → 100% | 6d → none |
| CON-LEG101-LR-3330 | Installation of Micron Marker Magnetic Tape [Local – 01 Segment-02] | 2026-06-06 → 2026-04-11 A (-56d) | 2026-06-07 → 2026-05-07 A (-31d) | 0% → 100% | 6d → none |
| CON-LEG101-LR-3420 | Backfilling to Subgrade Elevation [Local – 01 Segment-02] | 2026-06-08 → 2026-04-12 A (-57d) | 2026-06-14 → 2026-05-09 A (-36d) | 0% → 100% | 6d → none |
| 1 | **Manhole** | 2026-05-19 → 2026-03-11 (-69d) | 2026-06-16 → 2026-10-25 (+131d) |  |  |
| CON-LEG101-LR-3510 | Installation of Fiberglass Manholes [Local – 01 Segment-02] | 2026-05-19 → 2026-03-11 A (-69d) | 2026-06-16 → 2026-10-25 (+131d) | 0% → 98% | 13d → 36.38d |
| 3 | **LOCAL - 01 Segment-03 (From 2+133 to 3+200)** | 2026-05-09 → 2026-01-01 (-128d) | 2026-08-22 → 2026-11-02 (+72d) |  |  |
| 1 | **Stormwater Utilities** | 2026-05-09 → 2026-01-01 (-128d) | 2026-08-22 → 2026-11-02 (+72d) |  |  |
| 2 | **Pipe Work** | 2026-05-09 → 2026-01-01 (-128d) | 2026-06-25 → 2026-03-12 (-105d) |  |  |
| CON-LEG101-LR-3600 | Excavation for Stormwater Utilities Network [Local – 01 Segment-03] | 2026-05-09 → 2026-01-01 A (-128d) | 2026-05-19 → 2026-02-10 A (-98d) | 0% → 100% | 0d → none |
| CON-LEG101-LR-3700 | Granular bedding for Stormwater Utilities Network [Local – 01 Segment-03] | 2026-05-20 → 2026-01-03 A (-137d) | 2026-05-24 → 2026-02-12 A (-101d) | 0% → 100% | 12d → none |
| CON-LEG101-LR-3800 | Installation of Pipe for Stormwater Utilities Network [Local – 01 Segment-03] | 2026-05-25 → 2026-01-04 A (-141d) | 2026-06-07 → 2026-02-14 A (-113d) | 0% → 100% | 12d → none |
| CON-LEG101-LR-4000 | Granular Surround for Stormwater Utilities Network [Local – 01 Segment-03] | 2026-06-13 → 2026-01-05 A (-159d) | 2026-06-16 → 2026-02-15 A (-121d) | 0% → 100% | 16d → none |
| CON-LEG101-LR-3900 | Testing for Stormwater Utilities Network [Local – 01 Segment-03] | 2026-06-08 → 2026-01-06 A (-153d) | 2026-06-11 → 2026-03-02 A (-101d) | 0% → 100% | 16d → none |
| CON-LEG101-LR-4110 | Installation of Micron Marker Magnetic Tape [Local – 01 Segment-03] | 2026-06-17 → 2026-02-25 A (-112d) | 2026-06-18 → 2026-03-11 A (-99d) | 0% → 100% | 16d → none |
| CON-LEG101-LR-4220 | Backfilling to Subgrade Elevation [Local – 01 Segment-03] | 2026-06-20 → 2026-02-25 A (-115d) | 2026-06-25 → 2026-03-12 A (-105d) | 0% → 100% | 16d → none |
| 1 | **Manhole** | 2026-05-20 → 2026-01-01 (-139d) | 2026-07-07 → 2026-10-25 (+110d) |  |  |
| CON-LEG101-LR-11040 | Excavation of Inlet Manholes [Local – 01 Segment-03] | 2026-05-20 → 2026-01-01 A (-139d) | 2026-05-26 → 2026-02-10 A (-105d) | 0% → 100% | 15d → none |
| CON-LEG101-LR-11050 | PC of Inlet Manholes [Local – 01 Segment-03] | 2026-06-01 → 2026-01-15 A (-137d) | 2026-06-03 → 2026-02-14 A (-109d) | 0% → 100% | 15d → none |
| CON-LEG101-LR-4340 | Installation of Inlet Manholes [Local – 01 Segment-03] | 2026-06-08 → 2026-01-21 A (-138d) | 2026-06-23 → 2026-06-01 A (-22d) | 0% → 100% | 12d → none |
| CON-LEG101-LR-11060 | Backfilling of Inlet Manholes [Local – 01 Segment-03] | 2026-06-24 → 2026-03-26 A (-90d) | 2026-06-30 → 2026-06-04 A (-26d) | 0% → 100% | 12d → none |
| CON-LEG101-LR-11070 | Finishing and Testing of Inlet Manholes [Local – 01 Segment-03] | 2026-07-01 → 2026-03-28 A (-95d) | 2026-07-07 → 2026-10-25 (+110d) | 0% → 95% | 13d → 63.5d |
| 3 | **Concrete Chambers/Outfalls** | 2026-06-24 → 2026-04-21 (-64d) | 2026-08-22 → 2026-11-02 (+72d) |  |  |
| CON-LEG101-LR-11080 | Excavation of Concrete chambers [Local – 01 Segment-03] | 2026-06-24 → 2026-04-21 A (-64d) | 2026-06-30 → 2026-07-01 A (+1d) | 0% → 100% | 16d → none |
| CON-LEG101-LR-11090 | PC of Concrete chambers [Local – 01 Segment-03] | 2026-07-01 → 2026-04-23 A (-69d) | 2026-07-02 → 2026-07-01 A (-1d) | 0% → 100% | 16d → none |
| CON-LEG101-LR-4450 | Installation of Concrete chambers [Local – 01 Segment-03] | 2026-07-04 → 2026-05-19 A (-46d) | 2026-07-14 → 2026-07-02 A (-12d) | 0% → 100% | 16d → none |
| CON-LEG101-LR-11110 | Installation UPVC Pipes to Concrete chambers [Local – 01 Segment-03] | 2026-07-15 → 2026-05-20 A (-56d) | 2026-07-23 → 2026-07-02 A (-21d) | 0% → 100% | 16d → none |
| CON-LEG101-LR-11120 | Backfilling to Concrete chambers [Local – 01 Segment-03] | 2026-07-25 → 2026-06-01 A (-54d) | 2026-07-30 → 2026-07-04 A (-26d) | 0% → 100% | 16d → none |
| CON-LEG101-LR-11130 | FInishing and Testing of Concrete chambers [Local – 01 Segment-03] | 2026-08-16 → 2026-08-19 A (+3d) | 2026-08-22 → 2026-11-02 (+72d) | 0% → 95% | 14d → 83.75d |
| 4 | **Sanitary Sewerage** | 2026-05-20 → 2026-04-01 (-49d) | 2026-07-14 → 2026-10-25 (+103d) |  |  |
| 2 | **Pipe Work** | 2026-05-20 → 2026-04-01 (-49d) | 2026-07-13 → 2026-05-24 (-50d) |  |  |
| CON-LEG101-LR-2800 | Excavation for Sanitary Sewerage Network [Local – 01 Segment-03] | 2026-05-20 → 2026-04-01 A (-49d) | 2026-06-04 → 2026-04-27 A (-38d) | 0% → 100% | 0d → none |
| CON-LEG101-LR-2890 | Granular bedding for Sanitary Sewerage Network [Local – 01 Segment-03] | 2026-06-06 → 2026-04-07 A (-60d) | 2026-06-09 → 2026-04-29 A (-41d) | 0% → 100% | 0d → none |
| CON-LEG101-LR-2980 | Installation of Pipe for Sanitary Sewerage Network [Local – 01 Segment-03] | 2026-06-10 → 2026-04-08 A (-63d) | 2026-06-21 → 2026-04-30 A (-52d) | 0% → 100% | 0d → none |
| CON-LEG101-LR-3070 | Testing for Sanitary Sewerage Network [Local – 01 Segment-03] | 2026-06-22 → 2026-04-21 A (-62d) | 2026-06-25 → 2026-05-19 A (-37d) | 0% → 100% | 1d → none |
| CON-LEG101-LR-3160 | Concrete encasement, pipe dia 200 and 350 mm [Local – 01 Segment-03] | 2026-06-27 → 2026-04-22 A (-66d) | 2026-06-29 → 2026-05-20 A (-40d) | 0% → 100% | 1d → none |
| CON-LEG101-LR-3250 | Granular Surround for Sanitary Sewerage Network [Local – 01 Segment-03] | 2026-06-30 → 2026-04-23 A (-68d) | 2026-07-04 → 2026-05-20 A (-45d) | 0% → 100% | 1d → none |
| CON-LEG101-LR-3340 | Installation of Micron Marker Magnetic Tape [Local – 01 Segment-03] | 2026-07-05 → 2026-04-25 A (-71d) | 2026-07-06 → 2026-05-21 A (-46d) | 0% → 100% | 1d → none |
| CON-LEG101-LR-3430 | Backfilling to Subgrade Elevation [Local – 01 Segment-03] | 2026-07-07 → 2026-04-26 A (-72d) | 2026-07-13 → 2026-05-24 A (-50d) | 0% → 100% | 1d → none |
| 1 | **Manhole** | 2026-06-22 → 2026-04-01 (-82d) | 2026-07-14 → 2026-10-25 (+103d) |  |  |
| CON-LEG101-LR-3520 | Installation of Fiberglass Manholes [Local – 01 Segment-03] | 2026-06-22 → 2026-04-01 A (-82d) | 2026-07-14 → 2026-10-25 (+103d) | 0% → 95% | 0d → 62.8d |
| 2 | **Local – 02** | 2026-04-14 → 2026-02-12 (-61d) | 2026-09-01 → 2026-11-03 (+63d) |  |  |
| 1 | **Stormwater Utilities** | 2026-04-14 → 2026-02-19 (-54d) | 2026-09-01 → 2026-11-03 (+63d) |  |  |
| 2 | **Pipe Work** | 2026-04-14 → 2026-02-19 (-54d) | 2026-06-06 → 2026-04-28 (-39d) |  |  |
| CON-LEG101-LR-3610 | Excavation for Stormwater Utilities Network [Local – 02 ] | 2026-04-14 → 2026-02-19 A (-54d) | 2026-04-20 → 2026-03-28 A (-23d) | 0% → 100% | 6d → none |
| CON-LEG101-LR-3710 | Granular bedding for Stormwater Utilities Network [Local – 02 ] | 2026-04-21 → 2026-02-25 A (-55d) | 2026-04-25 → 2026-04-22 A (-3d) | 0% → 100% | 18d → none |

| ID | Task | Start | Finish | Complete | Total float |
| --- | --- | --- | --- | --- | --- |
| CON-LEG101-LR-3810 | Installation of Pipe for Stormwater Utilities Network [Local – 02 ] | 2026-05-05 → 2026-02-26 A (-68d) | 2026-05-13 → 2026-04-23 A (-20d) | 0% → 100% | 10d → none |
| CON-LEG101-LR-4010 | Granular Surround for Stormwater Utilities Network [Local – 02 ] | 2026-05-19 → 2026-04-09 A (-40d) | 2026-05-23 → 2026-04-26 A (-27d) | 0% → 100% | 14d → none |
| CON-LEG101-LR-3910 | Testing for Stormwater Utilities Network [Local – 02 ] | 2026-05-14 → 2026-04-11 A (-33d) | 2026-05-18 → 2026-04-25 A (-23d) | 0% → 100% | 14d → none |
| CON-LEG101-LR-4120 | Installation of Micron Marker Magnetic Tape [Local – 02 ] | 2026-05-24 → 2026-04-21 A (-33d) | 2026-05-25 → 2026-04-27 A (-28d) | 0% → 100% | 14d → none |
| CON-LEG101-LR-4230 | Backfilling to Subgrade Elevation [Local – 02 ] | 2026-05-26 → 2026-04-22 A (-34d) | 2026-06-06 → 2026-04-28 A (-39d) | 0% → 100% | 14d → none |
| 1 | **Manhole** | 2026-04-21 → 2026-02-19 (-61d) | 2026-07-19 → 2026-10-25 (+98d) |  |  |
| CON-LEG101-LR-11140 | Excavation of Inlet Manholes [Local – 02 ] | 2026-04-21 → 2026-02-19 A (-61d) | 2026-05-02 → 2026-03-28 A (-35d) | 0% → 100% | 15d → none |
| CON-LEG101-LR-11150 | PC of Inlet Manholes [Local – 02 ] | 2026-05-03 → 2026-03-25 A (-39d) | 2026-05-07 → 2026-03-29 A (-39d) | 0% → 100% | 15d → none |
| CON-LEG101-LR-4350 | Installation of Inlet Manholes [Local – 02 ] | 2026-05-14 → 2026-03-26 A (-49d) | 2026-06-03 → 2026-06-04 A (+1d) | 0% → 100% | 10d → none |
| CON-LEG101-LR-11170 | Backfilling of Inlet Manholes [Local – 02 ] | 2026-06-04 → 2026-04-15 A (-50d) | 2026-06-10 → 2026-06-07 A (-3d) | 0% → 100% | 10d → none |
| CON-LEG101-LR-11180 | Finishing and Testing of Inlet Manholes [Local – 02 ] | 2026-07-08 → 2026-07-05 A (-3d) | 2026-07-19 → 2026-10-25 (+98d) | 0% → 95% | 13d → 79.2d |
| 3 | **Concrete Chambers/Outfalls** | 2026-07-20 → 2026-05-02 (-79d) | 2026-09-01 → 2026-11-03 (+63d) |  |  |
| CON-LEG101-LR-11190 | Excavation of Concrete chambers [Local – 02 ] | 2026-07-20 → 2026-05-02 A (-79d) | 2026-07-26 → 2026-05-10 A (-77d) | 0% → 100% | 13d → none |
| CON-LEG101-LR-11200 | PC of Concrete chambers [Local – 02 ] | 2026-07-27 → 2026-05-03 A (-85d) | 2026-07-28 → 2026-05-11 A (-78d) | 0% → 100% | 13d → none |
| CON-LEG101-LR-11210 | Installation UPVC Pipes to Concrete chambers [Local – 02 ] | 2026-08-08 → 2026-05-04 A (-96d) | 2026-08-16 → 2026-05-13 A (-95d) | 0% → 100% | 13d → none |
| CON-LEG101-LR-4460 | Installation of Concrete chambers [Local – 02 ] | 2026-07-29 → 2026-05-04 A (-86d) | 2026-08-06 → 2026-05-12 A (-86d) | 0% → 100% | 13d → none |
| CON-LEG101-LR-11220 | Backfilling to Concrete chambers [Local – 02 ] | 2026-08-17 → 2026-05-06 A (-103d) | 2026-08-23 → 2026-05-21 A (-94d) | 0% → 100% | 13d → none |
| CON-LEG101-LR-11230 | FInishing and Testing of Concrete chambers [Local – 02 ] | 2026-08-24 → 2026-07-05 A (-50d) | 2026-09-01 → 2026-11-03 (+63d) | 0% → 95% | 13d → 83.75d |
| 4 | **Sanitary Sewerage** | 2026-04-21 → 2026-02-12 (-68d) | 2026-06-15 → 2026-10-25 (+132d) |  |  |
| 2 | **Pipe Work** | 2026-04-21 → 2026-02-12 (-68d) | 2026-06-14 → 2026-06-08 (-6d) |  |  |
| CON-LEG101-LR-2810 | Excavation for Sanitary Sewerage Network [Local – 02 ] | 2026-04-21 → 2026-02-12 A (-68d) | 2026-05-02 → 2026-05-19 A (+17d) | 0% → 100% | 6d → none |
| CON-LEG101-LR-2900 | Granular bedding for Sanitary Sewerage Network [Local – 02 ] | 2026-05-03 → 2026-02-19 A (-73d) | 2026-05-06 → 2026-05-20 A (+14d) | 0% → 100% | 6d → none |
| CON-LEG101-LR-2990 | Installation of Pipe for Sanitary Sewerage Network [Local – 02 ] | 2026-05-07 → 2026-02-21 A (-75d) | 2026-05-18 → 2026-05-21 A (+3d) | 0% → 100% | 6d → none |
| CON-LEG101-LR-3260 | Granular Surround for Sanitary Sewerage Network [Local – 02 ] | 2026-06-01 → 2026-02-22 A (-99d) | 2026-06-04 → 2026-05-23 A (-12d) | 0% → 100% | 7d → none |
| CON-LEG101-LR-3080 | Testing for Sanitary Sewerage Network [Local – 02 ] | 2026-05-19 → 2026-05-31 A (+12d) | 2026-05-23 → 2026-05-31 A (+8d) | 0% → 100% | 7d → none |
| CON-LEG101-LR-3170 | Concrete encasement, pipe dia 200 and 350 mm [Local – 02 ] | 2026-05-24 → 2026-06-01 A (+8d) | 2026-05-26 → 2026-06-02 A (+7d) | 0% → 100% | 7d → none |
| CON-LEG101-LR-3350 | Installation of Micron Marker Magnetic Tape [Local – 02 ] | 2026-06-06 → 2026-06-03 A (-3d) | 2026-06-07 → 2026-06-04 A (-3d) | 0% → 100% | 7d → none |
| CON-LEG101-LR-3440 | Backfilling to Subgrade Elevation [Local – 02 ] | 2026-06-08 → 2026-06-06 A (-2d) | 2026-06-14 → 2026-06-08 A (-6d) | 0% → 100% | 7d → none |
| 1 | **Manhole** | 2026-05-19 → 2026-02-12 (-96d) | 2026-06-15 → 2026-10-25 (+132d) |  |  |
| CON-LEG101-LR-3530 | Installation of Fiberglass Manholes [Local – 02 ] | 2026-05-19 → 2026-02-12 A (-96d) | 2026-06-15 → 2026-10-25 (+132d) | 0% → 95% | 6d → -28.24d |
| 3 | **Local – 03** | 2026-04-30 → 2026-02-14 (-75d) | 2026-09-15 → 2026-11-17 (+63d) |  |  |
| 1 | **Stormwater Utilities** | 2026-04-30 → 2026-02-14 (-75d) | 2026-09-15 → 2026-11-17 (+63d) |  |  |
| 2 | **Pipe Work** | 2026-04-30 → 2026-02-14 (-75d) | 2026-06-14 → 2026-05-24 (-21d) |  |  |
| CON-LEG101-LR-3620 | Excavation for Stormwater Utilities Network [Local – 03 ] | 2026-04-30 → 2026-02-14 A (-75d) | 2026-05-11 → 2026-04-30 A (-11d) | 0% → 100% | 11d → none |
| CON-LEG101-LR-3720 | Granular bedding for Stormwater Utilities Network [Local – 03 ] | 2026-05-12 → 2026-05-02 A (-10d) | 2026-05-14 → 2026-05-04 A (-10d) | 0% → 100% | 15d → none |
| CON-LEG101-LR-3820 | Installation of Pipe for Stormwater Utilities Network [Local – 03 ] | 2026-05-16 → 2026-05-05 A (-11d) | 2026-05-24 → 2026-05-09 A (-15d) | 0% → 100% | 15d → none |
| CON-LEG101-LR-3920 | Testing for Stormwater Utilities Network [Local – 03 ] | 2026-05-25 → 2026-05-19 A (-6d) | 2026-06-01 → 2026-05-19 A (-13d) | 0% → 100% | 15d → none |
| CON-LEG101-LR-4020 | Granular Surround for Stormwater Utilities Network [Local – 03 ] | 2026-06-02 → 2026-05-20 A (-13d) | 2026-06-04 → 2026-05-20 A (-15d) | 0% → 100% | 15d → none |
| CON-LEG101-LR-4130 | Installation of Micron Marker Magnetic Tape [Local – 03 ] | 2026-06-06 → 2026-05-21 A (-16d) | 2026-06-07 → 2026-05-21 A (-17d) | 0% → 100% | 15d → none |
| CON-LEG101-LR-4240 | Backfilling to Subgrade Elevation [Local – 03 ] | 2026-06-08 → 2026-05-23 A (-16d) | 2026-06-14 → 2026-05-24 A (-21d) | 0% → 100% | 15d → none |
| 1 | **Manhole** | 2026-05-12 → 2026-02-14 (-87d) | 2026-09-15 → 2026-11-17 (+63d) |  |  |
| CON-LEG101-LR-11240 | Excavation of Inlet Manholes [Local – 03 ] | 2026-05-12 → 2026-02-14 A (-87d) | 2026-05-18 → 2026-04-30 A (-18d) | 0% → 100% | 11d → none |
| CON-LEG101-LR-11250 | PC of Inlet Manholes [Local – 03 ] | 2026-05-19 → 2026-05-02 A (-17d) | 2026-05-21 → 2026-05-04 A (-17d) | 0% → 100% | 11d → none |
| CON-LEG101-LR-11260 | Installation of Inlet Manholes [Local – 03 ] | 2026-05-23 → 2026-05-05 A (-18d) | 2026-06-11 → 2026-06-01 A (-10d) | 0% → 100% | 11d → none |
| CON-LEG101-LR-11270 | Backfilling of Inlet Manholes [Local – 03 ] | 2026-06-13 → 2026-06-03 A (-10d) | 2026-06-18 → 2026-06-04 A (-14d) | 0% → 100% | 11d → none |
| CON-LEG101-LR-11280 | Finishing and Testing of Inlet Manholes [Local – 03 ] | 2026-08-24 → 2026-10-25 (+62d) | 2026-09-15 → 2026-11-17 (+63d) |  | 13d → 79.2d |
| 3 | **Concrete Chambers/Outfalls** | 2026-06-13 → 2026-06-15 (+2d) | 2026-09-14 → 2026-11-16 (+63d) |  |  |
| CON-LEG101-LR-11290 | Excavation of Concrete chambers [Local – 03 ] | 2026-06-13 → 2026-06-15 A (+2d) | 2026-06-25 → 2026-06-24 A (-1d) | 0% → 100% | 13d → none |
| CON-LEG101-LR-11300 | PC of Concrete chambers [Local – 03 ] | 2026-06-27 → 2026-06-16 A (-11d) | 2026-07-01 → 2026-06-25 A (-6d) | 0% → 100% | 13d → none |
| CON-LEG101-LR-11310 | Installation of Concrete chambers [Local – 03 ] | 2026-07-02 → 2026-06-17 A (-15d) | 2026-07-25 → 2026-06-25 A (-30d) | 0% → 100% | 13d → none |
| CON-LEG101-LR-11320 | Installation UPVC Pipes to Concrete chambers [Local – 03 ] | 2026-07-26 → 2026-06-18 A (-38d) | 2026-08-05 → 2026-06-27 A (-39d) | 0% → 100% | 13d → none |
| CON-LEG101-LR-11330 | Backfilling to Concrete chambers [Local – 03 ] | 2026-08-06 → 2026-06-20 A (-47d) | 2026-08-12 → 2026-06-30 A (-43d) | 0% → 100% | 13d → none |
| CON-LEG101-LR-11340 | FInishing and Testing of Concrete chambers [Local – 03 ] | 2026-09-02 → 2026-11-03 (+62d) | 2026-09-14 → 2026-11-16 (+63d) |  | 13d → 83.75d |
| 4 | **Local – 04** | 2026-06-27 → 2026-01-28 (-150d) | 2026-10-04 → 2027-01-03 (+91d) |  |  |
| 1 | **Stormwater Utilities** | 2026-06-27 → 2026-01-28 (-150d) | 2026-10-04 → 2027-01-03 (+91d) |  |  |
| 2 | **Pipe Work** | 2026-06-27 → 2026-01-28 (-150d) | 2026-08-19 → 2026-12-01 (+104d) |  |  |
| CON-LEG101-LR-3630 | Excavation for Stormwater Utilities Network [Local – 04 ] | 2026-06-27 → 2026-01-28 A (-150d) | 2026-07-04 → 2026-01-29 A (-156d) | 0% → 100% | 12d → none |
| CON-LEG101-LR-3730 | Granular bedding for Stormwater Utilities Network [Local – 04 ] | 2026-07-05 → 2026-01-31 A (-155d) | 2026-07-08 → 2026-01-31 A (-158d) | 0% → 100% | 13d → none |
| CON-LEG101-LR-3830 | Installation of Pipe for Stormwater Utilities Network [Local – 04 ] | 2026-07-09 → 2026-02-01 A (-158d) | 2026-07-18 → 2026-02-02 A (-166d) | 0% → 100% | 13d → none |
| CON-LEG101-LR-4030 | Granular Surround for Stormwater Utilities Network [Local – 04 ] | 2026-08-02 → 2026-02-01 A (-182d) | 2026-08-10 → 2026-02-02 A (-189d) | 0% → 100% | 15d → none |
| CON-LEG101-LR-3930 | Testing for Stormwater Utilities Network [Local – 04 ] | 2026-07-19 → 2026-11-11 (+115d) | 2026-08-01 → 2026-11-24 (+115d) |  | 15d → -42.24d |
| CON-LEG101-LR-4140 | Installation of Micron Marker Magnetic Tape [Local – 04 ] | 2026-08-13 → 2026-11-25 (+104d) | 2026-08-15 → 2026-11-26 (+103d) |  | 13d → -42.24d |
| CON-LEG101-LR-4250 | Backfilling to Subgrade Elevation [Local – 04 ] | 2026-08-16 → 2026-11-28 (+104d) | 2026-08-19 → 2026-12-01 (+104d) |  | 13d → -42.24d |
| 1 | **Manhole** | 2026-07-05 → 2026-01-28 (-158d) | 2026-10-04 → 2026-12-09 (+66d) |  |  |
| CON-LEG101-LR-11350 | Excavation of Inlet Manholes [Local – 04 ] | 2026-07-05 → 2026-01-28 A (-158d) | 2026-07-15 → 2026-01-29 A (-167d) | 0% → 100% | 12d → none |
| CON-LEG101-LR-11360 | PC of Inlet Manholes [Local – 04 ] | 2026-07-16 → 2026-03-01 A (-137d) | 2026-07-19 → 2026-03-01 A (-140d) | 0% → 100% | 12d → none |
| CON-LEG101-LR-4370 | Installation of Inlet Manholes [Local – 04 ] | 2026-07-20 → 2026-03-07 A (-135d) | 2026-07-30 → 2026-11-15 (+108d) | 0% → 60% | 12d → -34.24d |
| CON-LEG101-LR-11380 | Backfilling of Inlet Manholes [Local – 04 ] | 2026-08-01 → 2026-11-16 (+107d) | 2026-08-06 → 2026-11-22 (+108d) |  | 14d → -34.24d |
| CON-LEG101-LR-11390 | Finishing and Testing of Inlet Manholes [Local – 04 ] | 2026-09-16 → 2026-11-23 (+68d) | 2026-10-04 → 2026-12-09 (+66d) |  | 13d → 75d |
| 3 | **Concrete Chambers/Outfalls** | 2026-08-01 → 2026-11-16 (+107d) | 2026-09-29 → 2027-01-03 (+96d) |  |  |

| ID | Task | Start | Finish | Complete | Total float |
| --- | --- | --- | --- | --- | --- |
| CON-LEG101-LR-11400 | Excavation of Concrete chambers [Local – 04 ] | 2026-08-01 → 2026-11-16 (+107d) | 2026-08-06 → 2026-11-22 (+108d) |  | 12d → 25.8d |
| CON-LEG101-LR-11410 | PC of Concrete chambers [Local – 04 ] | 2026-08-08 → 2026-11-23 (+107d) | 2026-08-09 → 2026-11-24 (+107d) |  | 12d → 25.8d |
| CON-LEG101-LR-4470 | Installation of Concrete chambers [Local – 04 ] | 2026-08-10 → 2026-11-25 (+107d) | 2026-08-20 → 2026-12-06 (+108d) |  | 12d → 25.8d |
| CON-LEG101-LR-11420 | Installation UPVC Pipes to Concrete chambers [Local – 04 ] | 2026-08-22 → 2026-12-07 (+107d) | 2026-08-27 → 2026-12-13 (+108d) |  | 12d → 25.8d |
| CON-LEG101-LR-11430 | Backfilling to Concrete chambers [Local – 04 ] | 2026-08-29 → 2026-12-14 (+107d) | 2026-09-03 → 2026-12-20 (+108d) |  | 12d → 25.8d |
| CON-LEG101-LR-11440 | FInishing and Testing of Concrete chambers [Local – 04 ] | 2026-09-15 → 2026-12-21 (+97d) | 2026-09-29 → 2027-01-03 (+96d) |  | 13d → 53.95d |
| 4 | **Sanitary Sewerage** | 2026-07-05 → 2026-01-28 (-158d) | 2026-08-19 → 2026-11-23 (+96d) |  |  |
| 2 | **Pipe Work** | 2026-07-05 → 2026-01-28 (-158d) | 2026-08-19 → 2026-11-23 (+96d) |  |  |
| CON-LEG101-LR-2820 | Excavation for Sanitary Sewerage Network [Local – 04 ] | 2026-07-05 → 2026-01-28 A (-158d) | 2026-07-15 → 2026-01-29 A (-167d) | 0% → 100% | 13d → none |
| CON-LEG101-LR-2910 | Granular bedding for Sanitary Sewerage Network [Local – 04 ] | 2026-07-16 → 2026-01-30 A (-167d) | 2026-07-18 → 2026-01-31 A (-168d) | 0% → 100% | 13d → none |
| CON-LEG101-LR-3000 | Installation of Pipe for Sanitary Sewerage Network [Local – 04 ] | 2026-07-19 → 2026-02-01 A (-168d) | 2026-08-01 → 2026-02-02 A (-180d) | 0% → 100% | 13d → none |
| CON-LEG101-LR-3270 | Granular Surround for Sanitary Sewerage Network [Local – 04 ] | 2026-08-09 → 2026-02-01 A (-189d) | 2026-08-10 → 2026-02-02 A (-189d) | 0% → 100% | 13d → none |
| CON-LEG101-LR-3090 | Testing for Sanitary Sewerage Network [Local – 04 ] | 2026-08-02 → 2026-02-26 A (-157d) | 2026-08-04 → 2026-03-02 A (-155d) | 0% → 100% | 13d → none |
| CON-LEG101-LR-3180 | Concrete encasement, pipe dia 200 and 350 mm [Local – 04 ] | 2026-08-05 → 2026-11-11 (+98d) | 2026-08-08 → 2026-11-14 (+98d) |  | 13d → -35.24d |
| CON-LEG101-LR-3360 | Installation of Micron Marker Magnetic Tape [Local – 04 ] | 2026-08-11 → 2026-11-15 (+96d) | 2026-08-12 → 2026-11-16 (+96d) |  | 13d → -35.24d |
| CON-LEG101-LR-3450 | Backfilling to Subgrade Elevation [Local – 04 ] | 2026-08-13 → 2026-11-17 (+96d) | 2026-08-19 → 2026-11-23 (+96d) |  | 13d → -35.24d |
| 1 | **Manhole** | 2026-08-02 → 2026-01-28 (-186d) | 2026-08-12 → 2026-11-14 (+94d) |  |  |
| CON-LEG101-LR-3540 | Installation of Fiberglass Manholes [Local – 04 ] | 2026-08-02 → 2026-01-28 A (-186d) | 2026-08-12 → 2026-11-14 (+94d) | 0% → 75% | 19d → -27.24d |
| 5 | **Local – 05** | 2026-07-05 → 2026-01-20 (-166d) | 2026-10-17 → 2026-11-11 (+25d) |  |  |
| 1 | **Stormwater Utilities** | 2026-07-05 → 2026-01-21 (-165d) | 2026-10-17 → 2026-08-24 (-54d) |  |  |
| 2 | **Pipe Work** | 2026-07-05 → 2026-01-21 (-165d) | 2026-08-24 → 2026-04-30 (-116d) |  |  |
| CON-LEG101-LR-3640 | Excavation for Stormwater Utilities Network [Local – 05 ] | 2026-07-05 → 2026-01-21 A (-165d) | 2026-07-15 → 2026-04-23 A (-83d) | 0% → 100% | 12d → none |
| CON-LEG101-LR-3740 | Granular bedding for Stormwater Utilities Network [Local – 05 ] | 2026-07-16 → 2026-01-22 A (-175d) | 2026-07-20 → 2026-04-25 A (-86d) | 0% → 100% | 13d → none |
| CON-LEG101-LR-3840 | Installation of Pipe for Stormwater Utilities Network [Local – 05 ] | 2026-07-21 → 2026-01-24 A (-178d) | 2026-07-29 → 2026-04-26 A (-94d) | 0% → 100% | 13d → none |
| CON-LEG101-LR-4040 | Granular Surround for Stormwater Utilities Network [Local – 05 ] | 2026-08-06 → 2026-01-25 A (-193d) | 2026-08-12 → 2026-04-28 A (-106d) | 0% → 100% | 16d → none |
| CON-LEG101-LR-3940 | Testing for Stormwater Utilities Network [Local – 05 ] | 2026-07-30 → 2026-03-11 A (-141d) | 2026-08-05 → 2026-04-28 A (-99d) | 0% → 100% | 16d → none |
| CON-LEG101-LR-4150 | Installation of Micron Marker Magnetic Tape [Local – 05 ] | 2026-08-13 → 2026-03-14 A (-152d) | 2026-08-15 → 2026-04-29 A (-108d) | 0% → 100% | 16d → none |
| CON-LEG101-LR-4260 | Backfilling to Subgrade Elevation [Local – 05 ] | 2026-08-16 → 2026-03-16 A (-153d) | 2026-08-24 → 2026-04-30 A (-116d) | 0% → 100% | 16d → none |
| 1 | **Manhole** | 2026-07-16 → 2026-01-21 (-176d) | 2026-10-17 → 2026-08-24 (-54d) |  |  |
| CON-LEG101-LR-11450 | Excavation of Inlet Manholes [Local – 05 ] | 2026-07-16 → 2026-01-21 A (-176d) | 2026-07-27 → 2026-04-26 A (-92d) | 0% → 100% | 12d → none |
| CON-LEG101-LR-11460 | PC of Inlet Manholes [Local – 05 ] | 2026-07-28 → 2026-02-04 A (-174d) | 2026-07-30 → 2026-04-27 A (-94d) | 0% → 100% | 12d → none |
| CON-LEG101-LR-4380 | Installation of Inlet Manholes [Local – 05 ] | 2026-08-01 → 2026-02-11 A (-171d) | 2026-08-11 → 2026-04-30 A (-103d) | 0% → 100% | 12d → none |
| CON-LEG101-LR-11470 | Backfilling of Inlet Manholes [Local – 05 ] | 2026-08-12 → 2026-04-15 A (-119d) | 2026-08-20 → 2026-05-07 A (-105d) | 0% → 100% | 19d → none |
| CON-LEG101-LR-11480 | Finishing and Testing of Inlet Manholes [Local – 05 ] | 2026-10-05 → 2026-07-04 A (-93d) | 2026-10-17 → 2026-08-24 A (-54d) | 0% → 100% | 13d → none |
| 3 | **Concrete Chambers/Outfalls** | 2026-08-12 → 2026-05-02 (-102d) | 2026-10-15 → 2026-08-23 (-53d) |  |  |
| CON-LEG101-LR-11490 | Excavation of Concrete chambers [Local – 05 ] | 2026-08-12 → 2026-05-02 A (-102d) | 2026-08-18 → 2026-05-10 A (-100d) | 0% → 100% | 12d → none |
| CON-LEG101-LR-11500 | PC of Concrete chambers [Local – 05 ] | 2026-08-19 → 2026-05-03 A (-108d) | 2026-08-20 → 2026-05-11 A (-101d) | 0% → 100% | 12d → none |
| CON-LEG101-LR-11510 | Installation UPVC Pipes to Concrete chambers [Local – 05 ] | 2026-09-02 → 2026-05-04 A (-121d) | 2026-09-06 → 2026-05-14 A (-115d) | 0% → 100% | 12d → none |
| CON-LEG101-LR-4480 | Installation of Concrete chambers [Local – 05 ] | 2026-08-22 → 2026-05-04 A (-110d) | 2026-09-01 → 2026-05-13 A (-111d) | 0% → 100% | 12d → none |
| CON-LEG101-LR-11520 | Backfilling to Concrete chambers [Local – 05 ] | 2026-09-07 → 2026-05-07 A (-123d) | 2026-09-10 → 2026-05-16 A (-117d) | 0% → 100% | 12d → none |
| CON-LEG101-LR-11530 | FInishing and Testing of Concrete chambers [Local – 05 ] | 2026-09-30 → 2026-07-04 A (-88d) | 2026-10-15 → 2026-08-23 A (-53d) | 0% → 100% | 13d → none |
| 4 | **Sanitary Sewerage** | 2026-07-16 → 2026-01-20 (-177d) | 2026-08-29 → 2026-11-11 (+74d) |  |  |
| 2 | **Pipe Work** | 2026-07-16 → 2026-01-20 (-177d) | 2026-08-26 → 2026-05-07 (-111d) |  |  |
| CON-LEG101-LR-2830 | Excavation for Sanitary Sewerage Network [Local – 05 ] | 2026-07-16 → 2026-01-20 A (-177d) | 2026-07-25 → 2026-02-09 A (-166d) | 0% → 100% | 12d → none |
| CON-LEG101-LR-2920 | Granular bedding for Sanitary Sewerage Network [Local – 05 ] | 2026-07-26 → 2026-01-21 A (-186d) | 2026-07-29 → 2026-04-21 A (-99d) | 0% → 100% | 12d → none |
| CON-LEG101-LR-3010 | Installation of Pipe for Sanitary Sewerage Network [Local – 05 ] | 2026-07-30 → 2026-01-22 A (-189d) | 2026-08-08 → 2026-04-23 A (-107d) | 0% → 100% | 12d → none |
| CON-LEG101-LR-3280 | Granular Surround for Sanitary Sewerage Network [Local – 05 ] | 2026-08-18 → 2026-01-24 A (-206d) | 2026-08-19 → 2026-05-05 A (-106d) | 0% → 100% | 14d → none |
| CON-LEG101-LR-3200 | Concrete encasement, pipe dia 200 and 350 mm [Local – 05 ] | 2026-08-13 → 2026-02-10 A (-184d) | 2026-08-17 → 2026-02-10 A (-188d) | 0% → 100% | 14d → none |
| CON-LEG101-LR-3100 | Testing for Sanitary Sewerage Network [Local – 05 ] | 2026-08-09 → 2026-03-01 A (-161d) | 2026-08-12 → 2026-05-03 A (-101d) | 0% → 100% | 14d → none |
| CON-LEG101-LR-3370 | Installation of Micron Marker Magnetic Tape [Local – 05 ] | 2026-08-20 → 2026-03-11 A (-162d) | 2026-08-22 → 2026-05-06 A (-108d) | 0% → 100% | 14d → none |
| CON-LEG101-LR-3460 | Backfilling to Subgrade Elevation [Local – 05 ] | 2026-08-23 → 2026-03-14 A (-162d) | 2026-08-26 → 2026-05-07 A (-111d) | 0% → 100% | 14d → none |
| 1 | **Manhole** | 2026-08-09 → 2026-01-20 (-201d) | 2026-08-29 → 2026-11-11 (+74d) |  |  |
| CON-LEG101-LR-3550 | Installation of Fiberglass Manholes [Local – 05 ] | 2026-08-09 → 2026-01-20 A (-201d) | 2026-08-29 → 2026-11-11 (+74d) | 0% → 95% | 12d → 55.9d |
| 6 | **Local – 06** | 2026-07-05 → 2026-02-11 (-144d) | 2026-10-29 → 2026-08-23 (-67d) |  |  |
| 1 | **Stormwater Utilities** | 2026-07-05 → 2026-02-17 (-138d) | 2026-10-29 → 2026-08-23 (-67d) |  |  |
| 2 | **Pipe Work** | 2026-07-05 → 2026-02-17 (-138d) | 2026-08-30 → 2026-05-16 (-106d) |  |  |
| CON-LEG101-LR-3650 | Excavation for Stormwater Utilities Network [Local – 06 ] | 2026-07-05 → 2026-02-17 A (-138d) | 2026-07-15 → 2026-03-28 A (-109d) | 0% → 100% | 12d → none |
| CON-LEG101-LR-3750 | Granular bedding for Stormwater Utilities Network [Local – 06 ] | 2026-07-16 → 2026-02-18 A (-148d) | 2026-07-20 → 2026-04-27 A (-84d) | 0% → 100% | 12d → none |
| CON-LEG101-LR-3850 | Installation of Pipe for Stormwater Utilities Network [Local – 06 ] | 2026-07-21 → 2026-02-19 A (-152d) | 2026-08-01 → 2026-04-29 A (-94d) | 0% → 100% | 12d → none |
| CON-LEG101-LR-4050 | Granular Surround for Stormwater Utilities Network [Local – 06 ] | 2026-08-11 → 2026-02-19 A (-173d) | 2026-08-19 → 2026-05-12 A (-99d) | 0% → 100% | 12d → none |
| CON-LEG101-LR-3950 | Testing for Stormwater Utilities Network [Local – 06 ] | 2026-08-02 → 2026-04-11 A (-113d) | 2026-08-10 → 2026-05-11 A (-91d) | 0% → 100% | 12d → none |
| CON-LEG101-LR-4160 | Installation of Micron Marker Magnetic Tape [Local – 06 ] | 2026-08-20 → 2026-04-20 A (-122d) | 2026-08-22 → 2026-05-13 A (-101d) | 0% → 100% | 12d → none |
| CON-LEG101-LR-4280 | Backfilling to Subgrade Elevation [Local – 06 ] | 2026-08-23 → 2026-04-22 A (-123d) | 2026-08-30 → 2026-05-16 A (-106d) | 0% → 100% | 12d → none |
| 1 | **Manhole** | 2026-07-16 → 2026-02-17 (-149d) | 2026-10-28 → 2026-08-22 (-67d) |  |  |
| CON-LEG101-LR-11540 | Excavation of Inlet Manholes [Local – 06 ] | 2026-07-16 → 2026-02-17 A (-149d) | 2026-07-27 → 2026-03-28 A (-121d) | 0% → 100% | 12d → none |
| CON-LEG101-LR-11550 | PC of Inlet Manholes [Local – 06 ] | 2026-07-28 → 2026-03-29 A (-121d) | 2026-08-02 → 2026-03-30 A (-125d) | 0% → 100% | 12d → none |
| CON-LEG101-LR-4390 | Installation of Inlet Manholes [Local – 06 ] | 2026-08-03 → 2026-04-01 A (-124d) | 2026-08-13 → 2026-06-03 A (-71d) | 0% → 100% | 12d → none |
| CON-LEG101-LR-11560 | Backfilling of Inlet Manholes [Local – 06 ] | 2026-08-15 → 2026-04-22 A (-115d) | 2026-08-23 → 2026-06-06 A (-78d) | 0% → 100% | 18d → none |
| CON-LEG101-LR-11570 | Finishing and Testing of Inlet Manholes [Local – 06 ] | 2026-10-18 → 2026-08-01 A (-78d) | 2026-10-28 → 2026-08-22 A (-67d) | 0% → 100% | 13d → none |
| 3 | **Concrete Chambers/Outfalls** | 2026-08-15 → 2026-05-09 (-98d) | 2026-10-29 → 2026-08-23 (-67d) |  |  |

| ID | Task | Start | Finish | Complete | Total float |
| --- | --- | --- | --- | --- | --- |
| CON-LEG101-LR-11580 | Excavation of Concrete chambers [Local – 06 ] | 2026-08-15 → 2026-05-09 A (-98d) | 2026-08-20 → 2026-05-10 A (-102d) | 0% → 100% | 12d → none |
| CON-LEG101-LR-11590 | PC of Concrete chambers [Local – 06 ] | 2026-08-22 → 2026-05-11 A (-103d) | 2026-08-23 → 2026-05-11 A (-104d) | 0% → 100% | 12d → none |
| CON-LEG101-LR-4490 | Installation of Concrete chambers [Local – 06 ] | 2026-08-24 → 2026-05-12 A (-104d) | 2026-08-30 → 2026-05-14 A (-108d) | 0% → 100% | 12d → none |
| CON-LEG101-LR-11600 | Installation UPVC Pipes to Concrete chambers [Local – 06 ] | 2026-08-31 → 2026-05-13 A (-110d) | 2026-09-03 → 2026-05-16 A (-110d) | 0% → 100% | 12d → none |
| CON-LEG101-LR-11610 | Backfilling to Concrete chambers [Local – 06 ] | 2026-09-05 → 2026-05-17 A (-111d) | 2026-09-07 → 2026-05-21 A (-109d) | 0% → 100% | 12d → none |
| CON-LEG101-LR-11620 | FInishing and Testing of Concrete chambers [Local – 06 ] | 2026-10-17 → 2026-08-02 A (-76d) | 2026-10-29 → 2026-08-23 A (-67d) | 0% → 100% | 13d → none |
| 4 | **Sanitary Sewerage** | 2026-07-16 → 2026-02-11 (-155d) | 2026-08-30 → 2026-08-23 (-7d) |  |  |
| 2 | **Pipe Work** | 2026-07-16 → 2026-02-11 (-155d) | 2026-08-26 → 2026-03-29 (-150d) |  |  |
| CON-LEG101-LR-2840 | Excavation for Sanitary Sewerage Network [Local – 06 ] | 2026-07-16 → 2026-02-11 A (-155d) | 2026-07-22 → 2026-02-21 A (-151d) | 0% → 100% | 12d → none |
| CON-LEG101-LR-2930 | Granular bedding for Sanitary Sewerage Network [Local – 06 ] | 2026-07-23 → 2026-02-12 A (-161d) | 2026-07-27 → 2026-03-04 A (-145d) | 0% → 100% | 12d → none |
| CON-LEG101-LR-3020 | Installation of Pipe for Sanitary Sewerage Network [Local – 06 ] | 2026-07-28 → 2026-02-14 A (-164d) | 2026-08-05 → 2026-03-12 A (-146d) | 0% → 100% | 12d → none |
| CON-LEG101-LR-3300 | Granular Surround for Sanitary Sewerage Network [Local – 06 ] | 2026-08-16 → 2026-02-15 A (-182d) | 2026-08-19 → 2026-03-14 A (-158d) | 0% → 100% | 15d → none |
| CON-LEG101-LR-3110 | Testing for Sanitary Sewerage Network [Local – 06 ] | 2026-08-06 → 2026-03-14 A (-145d) | 2026-08-10 → 2026-03-15 A (-148d) | 0% → 100% | 15d → none |
| CON-LEG101-LR-3390 | Installation of Micron Marker Magnetic Tape [Local – 06 ] | 2026-08-20 → 2026-03-17 A (-156d) | 2026-08-22 → 2026-03-26 A (-149d) | 0% → 100% | 15d → none |
| CON-LEG101-LR-3210 | Concrete encasement, pipe dia 200 and 350 mm [Local – 06 ] | 2026-08-11 → 2026-03-25 A (-139d) | 2026-08-15 → 2026-03-25 A (-143d) | 0% → 100% | 15d → none |
| CON-LEG101-LR-3480 | Backfilling to Subgrade Elevation [Local – 06 ] | 2026-08-23 → 2026-03-28 A (-148d) | 2026-08-26 → 2026-03-29 A (-150d) | 0% → 100% | 15d → none |
| 1 | **Manhole** | 2026-08-06 → 2026-02-11 (-176d) | 2026-08-30 → 2026-08-23 (-7d) |  |  |
| CON-LEG101-LR-3560 | Installation of Fiberglass Manholes [Local – 06 ] | 2026-08-06 → 2026-02-11 A (-176d) | 2026-08-30 → 2026-08-23 A (-7d) | 0% → 100% | 12d → none |
| 7 | **Local – 07** | 2026-07-14 → 2026-02-18 (-146d) | 2026-11-07 → 2026-08-23 (-76d) |  |  |
| 1 | **Stormwater Utilities** | 2026-07-14 → 2026-02-18 (-146d) | 2026-11-07 → 2026-08-23 (-76d) |  |  |
| 2 | **Pipe Work** | 2026-07-14 → 2026-02-18 (-146d) | 2026-08-01 → 2026-04-09 (-114d) |  |  |
| CON-LEG101-LR-3660 | Excavation for Stormwater Utilities Network [Local – 07 ] | 2026-07-14 → 2026-02-18 A (-146d) | 2026-07-16 → 2026-02-21 A (-145d) | 0% → 100% | 12d → none |
| CON-LEG101-LR-3760 | Granular bedding for Stormwater Utilities Network [Local – 07 ] | 2026-07-18 → 2026-02-22 A (-146d) | 2026-07-19 → 2026-02-22 A (-147d) | 0% → 100% | 12d → none |
| CON-LEG101-LR-3860 | Installation of Pipe for Stormwater Utilities Network [Local – 07 ] | 2026-07-20 → 2026-02-22 A (-148d) | 2026-07-21 → 2026-02-23 A (-148d) | 0% → 100% | 12d → none |
| CON-LEG101-LR-4060 | Granular Surround for Stormwater Utilities Network [Local – 07 ] | 2026-07-25 → 2026-02-24 A (-151d) | 2026-07-26 → 2026-02-24 A (-152d) | 0% → 100% | 12d → none |
| CON-LEG101-LR-3960 | Testing for Stormwater Utilities Network [Local – 07 ] | 2026-07-22 → 2026-03-15 A (-129d) | 2026-07-23 → 2026-03-16 A (-129d) | 0% → 100% | 12d → none |
| CON-LEG101-LR-4180 | Installation of Micron Marker Magnetic Tape [Local – 07 ] | 2026-07-27 → 2026-04-05 A (-113d) | 2026-07-29 → 2026-04-06 A (-114d) | 0% → 100% | 12d → none |
| CON-LEG101-LR-4290 | Backfilling to Subgrade Elevation [Local – 07 ] | 2026-07-30 → 2026-04-08 A (-113d) | 2026-08-01 → 2026-04-09 A (-114d) | 0% → 100% | 12d → none |
| 1 | **Manhole** | 2026-08-02 → 2026-02-18 (-165d) | 2026-11-07 → 2026-08-23 (-76d) |  |  |
| CON-LEG101-LR-11630 | Excavation of Inlet Manholes [Local – 07 ] | 2026-08-02 → 2026-02-18 A (-165d) | 2026-08-04 → 2026-02-21 A (-164d) | 0% → 100% | 12d → none |
| CON-LEG101-LR-11640 | PC of Inlet Manholes [Local – 07 ] | 2026-08-05 → 2026-02-22 A (-164d) | 2026-08-06 → 2026-02-22 A (-165d) | 0% → 100% | 12d → none |
| CON-LEG101-LR-4400 | Installation of Inlet Manholes [Local – 07 ] | 2026-08-08 → 2026-03-10 A (-151d) | 2026-08-16 → 2026-04-25 A (-113d) | 0% → 100% | 12d → none |
| CON-LEG101-LR-11650 | Backfilling of Inlet Manholes [Local – 07 ] | 2026-08-17 → 2026-04-26 A (-113d) | 2026-08-25 → 2026-04-29 A (-118d) | 0% → 100% | 17d → none |
| CON-LEG101-LR-11660 | Finishing and Testing of Inlet Manholes [Local – 07 ] | 2026-10-29 → 2026-08-05 A (-85d) | 2026-11-07 → 2026-08-23 A (-76d) | 0% → 100% | 13d → none |
| 3 | **Concrete Chambers/Outfalls** | 2026-08-17 → 2026-04-25 (-114d) | 2026-11-05 → 2026-08-23 (-74d) |  |  |
| CON-LEG101-LR-11670 | Excavation of Concrete chambers [Local – 07 ] | 2026-08-17 → 2026-04-25 A (-114d) | 2026-08-19 → 2026-04-26 A (-115d) | 0% → 100% | 12d → none |
| CON-LEG101-LR-11680 | PC of Concrete chambers [Local – 07 ] | 2026-08-20 → 2026-04-27 A (-115d) | 2026-08-22 → 2026-04-28 A (-116d) | 0% → 100% | 12d → none |
| CON-LEG101-LR-11690 | Installation UPVC Pipes to Concrete chambers [Local – 07 ] | 2026-08-30 → 2026-04-29 A (-123d) | 2026-09-02 → 2026-04-30 A (-125d) | 0% → 100% | 12d → none |
| CON-LEG101-LR-4500 | Installation of Concrete chambers [Local – 07 ] | 2026-08-23 → 2026-04-29 A (-116d) | 2026-08-29 → 2026-04-30 A (-121d) | 0% → 100% | 12d → none |
| CON-LEG101-LR-11700 | Backfilling to Concrete chambers [Local – 07 ] | 2026-09-03 → 2026-05-02 A (-124d) | 2026-09-06 → 2026-05-04 A (-125d) | 0% → 100% | 12d → none |
| CON-LEG101-LR-11710 | FInishing and Testing of Concrete chambers [Local – 07 ] | 2026-10-31 → 2026-08-06 A (-86d) | 2026-11-05 → 2026-08-23 A (-74d) | 0% → 100% | 13d → none |
| 4 | **Sanitary Sewerage** | 2026-08-08 → 2026-05-02 (-98d) | 2026-08-31 → 2026-08-23 (-8d) |  |  |
| 2 | **Pipe Work** | 2026-08-08 → 2026-05-02 (-98d) | 2026-08-27 → 2026-06-08 (-80d) |  |  |
| CON-LEG101-LR-2850 | Excavation for Sanitary Sewerage Network [Local – 07 ] | 2026-08-08 → 2026-05-02 A (-98d) | 2026-08-10 → 2026-05-03 A (-99d) | 0% → 100% | 12d → none |
| CON-LEG101-LR-2940 | Granular bedding for Sanitary Sewerage Network [Local – 07 ] | 2026-08-11 → 2026-05-04 A (-99d) | 2026-08-12 → 2026-05-05 A (-99d) | 0% → 100% | 12d → none |
| CON-LEG101-LR-3030 | Installation of Pipe for Sanitary Sewerage Network [Local – 07 ] | 2026-08-13 → 2026-05-06 A (-99d) | 2026-08-17 → 2026-05-09 A (-100d) | 0% → 100% | 12d → none |
| CON-LEG101-LR-3120 | Testing for Sanitary Sewerage Network [Local – 07 ] | 2026-08-18 → 2026-05-23 A (-87d) | 2026-08-19 → 2026-05-24 A (-87d) | 0% → 100% | 15d → none |
| CON-LEG101-LR-3220 | Concrete encasement, pipe dia 200 and 350 mm [Local – 07 ] | 2026-08-20 → 2026-06-01 A (-80d) | 2026-08-22 → 2026-06-02 A (-81d) | 0% → 100% | 15d → none |
| CON-LEG101-LR-3310 | Granular Surround for Sanitary Sewerage Network [Local – 07 ] | 2026-08-23 → 2026-06-03 A (-81d) | 2026-08-24 → 2026-06-03 A (-82d) | 0% → 100% | 15d → none |
| CON-LEG101-LR-3400 | Installation of Micron Marker Magnetic Tape [Local – 07 ] | 2026-08-25 → 2026-06-04 A (-82d) | 2026-08-25 → 2026-06-04 A (-82d) | 0% → 100% | 15d → none |
| CON-LEG101-LR-3490 | Backfilling to Subgrade Elevation [Local – 07 ] | 2026-08-26 → 2026-06-06 A (-81d) | 2026-08-27 → 2026-06-08 A (-80d) | 0% → 100% | 15d → none |
| 1 | **Manhole** | 2026-08-18 → 2026-05-02 (-108d) | 2026-08-31 → 2026-08-23 (-8d) |  |  |
| CON-LEG101-LR-3570 | Installation of Fiberglass Manholes [Local – 07 ] | 2026-08-18 → 2026-05-02 A (-108d) | 2026-08-31 → 2026-08-23 A (-8d) | 0% → 100% | 12d → none |
| 8 | **Local – 08** | 2026-06-15 → 2026-01-17 (-149d) | 2026-11-18 → 2027-01-04 (+47d) |  |  |
| 1 | **Stormwater Utilities** | 2026-06-15 → 2026-01-17 (-149d) | 2026-11-18 → 2027-01-04 (+47d) |  |  |
| 2 | **Pipe Work** | 2026-06-15 → 2026-01-17 (-149d) | 2026-08-10 → 2026-03-07 (-156d) |  |  |
| CON-LEG101-LR-3670 | Excavation for Stormwater Utilities Network [Local – 08 ] | 2026-06-15 → 2026-01-17 A (-149d) | 2026-06-25 → 2026-01-21 A (-155d) | 0% → 100% | 12d → none |
| CON-LEG101-LR-3770 | Granular bedding for Stormwater Utilities Network [Local – 08 ] | 2026-06-27 → 2026-01-19 A (-159d) | 2026-06-30 → 2026-01-25 A (-156d) | 0% → 100% | 12d → none |
| CON-LEG101-LR-3870 | Installation of Pipe for Stormwater Utilities Network [Local – 08 ] | 2026-07-01 → 2026-01-20 A (-162d) | 2026-07-12 → 2026-01-31 A (-162d) | 0% → 100% | 12d → none |
| CON-LEG101-LR-4080 | Granular Surround for Stormwater Utilities Network [Local – 08 ] | 2026-07-22 → 2026-01-20 A (-183d) | 2026-07-28 → 2026-02-01 A (-177d) | 0% → 100% | 19d → none |
| CON-LEG101-LR-3970 | Testing for Stormwater Utilities Network [Local – 08 ] | 2026-07-13 → 2026-02-21 A (-142d) | 2026-07-21 → 2026-02-26 A (-145d) | 0% → 100% | 19d → none |
| CON-LEG101-LR-4190 | Installation of Micron Marker Magnetic Tape [Local – 08 ] | 2026-07-29 → 2026-02-28 A (-151d) | 2026-08-02 → 2026-03-05 A (-150d) | 0% → 100% | 19d → none |
| CON-LEG101-LR-4300 | Backfilling to Subgrade Elevation [Local – 08 ] | 2026-08-03 → 2026-02-28 A (-156d) | 2026-08-10 → 2026-03-07 A (-156d) | 0% → 100% | 19d → none |
| 1 | **Manhole** | 2026-06-27 → 2026-01-17 (-161d) | 2026-11-18 → 2026-12-10 (+22d) |  |  |
| CON-LEG101-LR-11720 | Excavation of Inlet Manholes [Local – 08 ] | 2026-06-27 → 2026-01-17 A (-161d) | 2026-07-07 → 2026-01-21 A (-167d) | 0% → 100% | 13d → none |
| CON-LEG101-LR-11730 | PC of Inlet Manholes [Local – 08 ] | 2026-07-08 → 2026-01-25 A (-164d) | 2026-07-11 → 2026-01-31 A (-161d) | 0% → 100% | 13d → none |
| CON-LEG101-LR-4410 | Installation of Inlet Manholes [Local – 08 ] | 2026-07-13 → 2026-01-29 A (-165d) | 2026-07-28 → 2026-06-01 A (-57d) | 0% → 100% | 12d → none |
| CON-LEG101-LR-11740 | Backfilling of Inlet Manholes [Local – 08 ] | 2026-07-29 → 2026-03-25 A (-126d) | 2026-08-09 → 2026-06-04 A (-66d) | 0% → 100% | 20d → none |
| CON-LEG101-LR-11750 | Finishing and Testing of Inlet Manholes [Local – 08 ] | 2026-11-08 → 2026-08-26 A (-74d) | 2026-11-18 → 2026-12-10 (+22d) | 0% → 95% | 13d → 75d |
| 3 | **Concrete Chambers/Outfalls** | 2026-07-29 → 2026-06-09 (-50d) | 2026-11-18 → 2027-01-04 (+47d) |  |  |

| ID | Task | Start | Finish | Complete | Total float |
| --- | --- | --- | --- | --- | --- |
| CON-LEG101-LR-11760 | Excavation of Concrete chambers [Local – 08 ] | 2026-07-29 → 2026-06-09 A (-50d) | 2026-08-04 → 2026-06-24 A (-41d) | 0% → 100% | 12d → none |
| CON-LEG101-LR-11770 | PC of Concrete chambers [Local – 08 ] | 2026-08-05 → 2026-06-11 A (-55d) | 2026-08-06 → 2026-06-25 A (-42d) | 0% → 100% | 12d → none |
| CON-LEG101-LR-11780 | Installation UPVC Pipes to Concrete chambers [Local – 08 ] | 2026-08-22 → 2026-06-13 A (-70d) | 2026-09-01 → 2026-06-28 A (-65d) | 0% → 100% | 12d → none |
| CON-LEG101-LR-4510 | Installation of Concrete chambers [Local – 08 ] | 2026-08-08 → 2026-06-13 A (-56d) | 2026-08-20 → 2026-06-27 A (-54d) | 0% → 100% | 12d → none |
| CON-LEG101-LR-11790 | Backfilling to Concrete chambers [Local – 08 ] | 2026-09-02 → 2026-06-17 A (-77d) | 2026-09-08 → 2026-06-30 A (-70d) | 0% → 100% | 12d → none |
| CON-LEG101-LR-11800 | FInishing and Testing of Concrete chambers [Local – 08 ] | 2026-11-07 → 2026-08-26 A (-73d) | 2026-11-18 → 2027-01-04 (+47d) | 0% → 95% | 13d → 53.95d |
| 7 | **Shallow infrastructure network** | 2026-06-15 → 2026-01-13 (-153d) | 2027-03-18 → 2027-09-18 (+184d) |  |  |
| 1 | **Local – 01** | 2026-06-15 → 2026-01-13 (-153d) | 2027-03-18 → 2027-07-14 (+118d) |  |  |
| 1 | **LOCAL - 01 Segment-01 (From 0+000 to 1+066)** | 2026-06-16 → 2026-01-13 (-154d) | 2027-03-18 → 2027-07-13 (+117d) |  |  |
| 5 | **TSE Network** | 2026-06-16 → 2026-01-13 (-154d) | 2026-12-21 → 2026-09-05 (-107d) |  |  |
| 2 | **Pipe Work** | 2026-06-16 → 2026-01-13 (-154d) | 2026-10-08 → 2026-05-04 (-157d) |  |  |
| CON-LEG101-LR-1300 | Excavation for TSE Network [Local – 01 Segment-01] | 2026-06-16 → 2026-01-13 A (-154d) | 2026-07-02 → 2026-01-21 A (-162d) | 0% → 100% | 9d → none |
| CON-LEG101-LR-1410 | Granular bedding for TSE Network [Local – 01 Segment-01] | 2026-07-04 → 2026-01-14 A (-171d) | 2026-07-16 → 2026-01-22 A (-175d) | 0% → 100% | 9d → none |
| CON-LEG101-LR-1520 | Installation of Pipe for TSE Network [Local – 01 Segment-01] | 2026-07-18 → 2026-01-15 A (-184d) | 2026-08-09 → 2026-02-19 A (-171d) | 0% → 100% | 9d → none |
| CON-LEG101-LR-1850 | Granular Surround for TSE Network [Local – 01 Segment-01] | 2026-08-30 → 2026-01-25 A (-217d) | 2026-09-14 → 2026-02-19 A (-207d) | 0% → 100% | 9d → none |
| CON-LEG101-LR-1960 | Installation of Micron Marker Magnetic Tape [Local – 01 Segment-01] | 2026-09-15 → 2026-02-07 A (-220d) | 2026-09-21 → 2026-02-21 A (-212d) | 0% → 100% | 9d → none |
| CON-LEG101-LR-2070 | Backfilling to Subgrade Elevation [Local – 01 Segment-01] | 2026-09-22 → 2026-02-08 A (-226d) | 2026-10-08 → 2026-02-23 A (-227d) | 0% → 100% | 9d → none |
| CON-LEG101-LR-1750 | Concrete encasement, pipe dia 110 mm [Local – 01 Segment-01] | 2026-08-26 → 2026-02-28 A (-179d) | 2026-08-29 → 2026-03-01 A (-181d) | 0% → 100% | 9d → none |
| CON-LEG101-LR-1640 | Testing for TSE Network [Local – 01 Segment-01] | 2026-08-10 → 2026-03-10 A (-153d) | 2026-08-25 → 2026-05-04 A (-113d) | 0% → 100% | 9d → none |
| 1 | **Valves/Chamber** | 2026-08-10 → 2026-02-25 (-166d) | 2026-12-21 → 2026-09-05 (-107d) |  |  |
| CON-LEG101-LR-2460 | Installation of Fire Hydrant [Local – 01 Segment-01] | 2026-11-28 → 2026-02-25 A (-276d) | 2026-12-21 → 2026-07-01 A (-173d) | 0% → 100% | 19d → none |
| CON-LEG101-LR-2190 | Installation of Gate (Sluice) valves (Direct buried) [Local – 01 Segment-01] | 2026-09-29 → 2026-02-28 A (-213d) | 2026-10-22 → 2026-07-02 A (-112d) | 0% → 100% | 19d → none |
| CON-LEG101-LR-2310 | Installation of Wash-out Valves [Local – 01 Segment-01] | 2026-10-24 → 2026-02-28 A (-238d) | 2026-11-09 → 2026-07-02 A (-130d) | 0% → 100% | 19d → none |
| CON-LEG101-LR-2380 | Installation of Air Valves [Local – 01 Segment-01] | 2026-11-10 → 2026-02-28 A (-255d) | 2026-11-26 → 2026-07-02 A (-147d) | 0% → 100% | 19d → none |
| CON-LEG101-LR-2680 | Installation of Air Valve chambers [Local – 01 Segment-01] | 2026-09-03 → 2026-02-28 A (-187d) | 2026-09-28 → 2026-09-05 A (-23d) | 0% → 100% | 19d → none |
| CON-LEG101-LR-2610 | Installation of Wash out chambers [Local – 01 Segment-01] | 2026-08-10 → 2026-04-21 A (-111d) | 2026-09-02 → 2026-09-03 A (+1d) | 0% → 100% | 19d → none |
| 6 | **Public Water Utility Distribution** | 2026-07-04 → 2026-01-13 (-172d) | 2026-11-05 → 2026-09-05 (-61d) |  |  |
| 2 | **Pipe Work** | 2026-07-04 → 2026-01-13 (-172d) | 2026-10-08 → 2026-03-24 (-198d) |  |  |
| CON-LEG101-LR-10040 | Excavation for Public Water Utility Distribution Piping [Local – 01 Segment-01] | 2026-07-04 → 2026-01-13 A (-172d) | 2026-07-22 → 2026-01-21 A (-182d) | 0% → 100% | 9d → none |
| CON-LEG101-LR-10140 | Granular bedding for Public Water Utility Distribution Piping [Local – 01 Segment-01] | 2026-07-23 → 2026-01-13 A (-191d) | 2026-08-03 → 2026-01-22 A (-193d) | 0% → 100% | 9d → none |
| CON-LEG101-LR-10240 | Installation of Pipe for Public Water Utility Distribution Piping [Local – 01 Segment-01] | 2026-08-04 → 2026-01-15 A (-201d) | 2026-08-24 → 2026-02-19 A (-186d) | 0% → 100% | 9d → none |
| CON-LEG101-LR-10540 | Granular Surround for Public Water Utility Distribution Piping [Local – 01 Segment-01] | 2026-09-09 → 2026-01-26 A (-226d) | 2026-09-24 → 2026-02-19 A (-217d) | 0% → 100% | 9d → none |
| CON-LEG101-LR-10640 | Installation of Micron Marker Magnetic Tape [Local – 01 Segment-01] | 2026-09-26 → 2026-02-07 A (-231d) | 2026-09-27 → 2026-02-21 A (-218d) | 0% → 100% | 9d → none |
| CON-LEG101-LR-10740 | Backfilling to Subgrade Elevation [Local – 01 Segment-01] | 2026-09-28 → 2026-02-08 A (-232d) | 2026-10-08 → 2026-02-23 A (-227d) | 0% → 100% | 9d → none |
| CON-LEG101-LR-10440 | Concrete encasement, pipe dia 110 mm [Local – 01 Segment-01] | 2026-09-06 → 2026-02-28 A (-190d) | 2026-09-08 → 2026-03-01 A (-191d) | 0% → 100% | 9d → none |
| CON-LEG101-LR-10340 | Testing for Public Water Utility Distribution Piping [Local – 01 Segment-01] | 2026-08-25 → 2026-03-11 A (-167d) | 2026-09-05 → 2026-03-24 A (-165d) | 0% → 100% | 9d → none |
| 1 | **Valves/Chamber** | 2026-09-03 → 2026-02-28 (-187d) | 2026-11-05 → 2026-09-05 (-61d) |  |  |
| CON-LEG101-LR-1000 | Installation of Gate (Sluice) valves (Direct buried) [Local – 01 Segment-01] | 2026-10-10 → 2026-02-28 A (-224d) | 2026-10-20 → 2026-08-05 A (-76d) | 0% → 100% | 14d → none |
| CON-LEG101-LR-1110 | Installation of Wash-out Valves [Local – 01 Segment-01] | 2026-10-21 → 2026-02-28 A (-235d) | 2026-10-28 → 2026-07-02 A (-118d) | 0% → 100% | 14d → none |
| CON-LEG101-LR-1150 | Installation of Air Valves [Local – 01 Segment-01] | 2026-10-29 → 2026-02-28 A (-243d) | 2026-11-05 → 2026-07-02 A (-126d) | 0% → 100% | 14d → none |
| CON-LEG101-LR-1250 | Installation of Air Valve chambers [Local – 01 Segment-01] | 2026-09-28 → 2026-02-28 A (-212d) | 2026-10-20 → 2026-09-05 A (-45d) | 0% → 100% | 21d → none |
| CON-LEG101-LR-1210 | Installation of Wash out chambers [Local – 01 Segment-01] | 2026-09-03 → 2026-04-21 A (-135d) | 2026-09-27 → 2026-09-03 A (-24d) | 0% → 100% | 21d → none |
| 1 | **Electrical Works** | 2026-10-10 → 2026-04-02 (-191d) | 2027-02-15 → 2027-06-19 (+124d) |  |  |
| 3 | **Low Voltage** | 2026-10-10 → 2026-04-02 (-191d) | 2027-02-15 → 2027-06-19 (+124d) |  |  |
| CON-LEG101-LR-7980 | Installation of Low Voltage Cables Duct Banks [Local – 01 Segment-01] | 2026-10-29 → 2026-04-02 A (-210d) | 2026-11-11 → 2026-04-30 A (-195d) | 0% → 100% | 16d → none |
| CON-LEG101-LR-7780 | Excavation works for Low Voltage Cables [Local – 01 Segment-01] | 2026-10-10 → 2026-06-01 A (-131d) | 2026-10-28 → 2027-06-10 (+225d) | 0% → 75% | 9d → -96.2d |
| CON-LEG101-LR-7880 | Installation of Low Voltage Cables [Local – 01 Segment-01] | 2026-11-12 → 2026-06-04 A (-161d) | 2026-12-06 → 2027-06-16 (+192d) | 0% → 75% | 23d → -72.2d |
| CON-LEG101-LR-8760 | Installation of Earthing System [Local – 01 Segment-01] | 2027-02-03 → 2026-07-05 A (-213d) | 2027-02-15 → 2027-06-19 (+124d) | 0% → 70% | 45d → 40.8d |
| 10 | **Telecommunications** | 2026-10-29 → 2026-04-02 (-210d) | 2027-03-14 → 2027-07-13 (+121d) |  |  |
| CON-LEG101-LR-8830 | Installation of Sand and soil encased duct banks for primary network [Local – 01 Segment-01] | 2026-10-29 → 2026-04-02 A (-210d) | 2026-11-21 → 2026-04-30 A (-205d) | 0% → 100% | 9d → none |
| CON-LEG101-LR-9330 | Installation of Reinforced concrete manhole [Local – 01 Segment-01] | 2027-02-17 → 2026-04-04 A (-319d) | 2027-03-14 → 2027-07-13 (+121d) | 0% → 90% | 23d → 19.65d |
| CON-LEG101-LR-8930 | Installation of Concrete encased duct banks for primary network [Local – 01 Segment-01] | 2026-12-07 → 2026-04-07 A (-244d) | 2026-12-19 → 2026-04-26 A (-237d) | 0% → 100% | 23d → none |
| CON-LEG101-LR-9030 | Installation of Sand encased duct banks for secondary network [Local – 01 Segment-01] | 2026-12-20 → 2026-07-08 A (-165d) | 2027-01-04 → 2027-06-23 (+170d) | 0% → 55% | 23d → 19.65d |
| CON-LEG101-LR-9130 | Installation of Sand and soil encased duct banks, for combined network of primary and secondary [Local – 01 Segment-01 | 2027-01-05 → 2026-07-08 A (-181d) | 2027-01-25 → 2027-07-03 (+159d) | 0% → 55% | 23d → 19.65d |
| CON-LEG101-LR-9230 | Installation of Concrete encased duct banks for for combined network of primary and secondary [Local – 01 Segment-01] | 2027-01-26 → 2026-07-08 A (-202d) | 2027-02-16 → 2027-07-11 (+145d) | 0% → 55% | 23d → 19.65d |
| 11 | **CCTV feeding system and GSM** | 2026-11-22 → 2026-04-13 (-223d) | 2027-03-18 → 2027-06-24 (+98d) |  |  |
| CON-LEG101-LR-8550 | Excavation works for Low Voltage Cables for CCTV feeding system and GSM [Local – 01 Segment-01] | 2026-11-22 → 2026-04-13 A (-223d) | 2026-11-28 → 2027-06-10 (+194d) | 0% → 90% | 9d → -96.2d |
| CON-LEG101-LR-9870 | Installation of 35 Meters mono pole with Double Platform for Access Points [Local – 01 Segment-01] | 2027-03-17 → 2026-05-16 A (-305d) | 2027-03-18 → 2026-07-08 A (-253d) | 0% → 100% | 19d → none |
| CON-LEG101-LR-9880 | Installation of 25 Meters pole for CCTV Cameras [Local – 01 Segment-01] | 2027-03-17 → 2026-05-16 A (-305d) | 2027-03-18 → 2026-07-12 A (-249d) | 0% → 100% | 19d → none |
| CON-LEG101-LR-9430 | Installation of Fiber Optic Patch Panel 12 port [Local – 01 Segment-01] | 2026-12-03 → 2026-07-01 A (-155d) | 2026-12-10 → 2027-06-14 (+186d) | 0% → 90% | 57d → 33.95d |
| CON-LEG101-LR-9450 | Installation of Modular Industrial Switches for main pole [Local – 01 Segment-01] | 2026-12-19 → 2026-07-01 A (-171d) | 2026-12-26 → 2027-06-14 (+170d) | 0% → 90% | 51d → 33.95d |
| CON-LEG101-LR-9460 | Installation of 8POE ports Industrial Switches for remote poles [Local – 01 Segment-01] | 2026-12-27 → 2026-07-01 A (-179d) | 2027-01-03 → 2027-06-15 (+163d) | 0% → 90% | 51d → 33.95d |
| CON-LEG101-LR-9520 | Installation of Core Switch [Local – 01 Segment-01] | 2027-01-17 → 2026-07-01 A (-200d) | 2027-01-19 → 2027-06-15 (+147d) | 0% → 90% | 40d → 33.95d |
| CON-LEG101-LR-9540 | Installation of Access Switch 48 port [Local – 01 Segment-01] | 2027-01-21 → 2026-07-01 A (-204d) | 2027-01-24 → 2027-06-16 (+143d) | 0% → 90% | 39d → 33.95d |
| CON-LEG101-LR-9560 | Installation of Server [Local – 01 Segment-01] | 2027-01-25 → 2026-07-01 A (-208d) | 2027-01-27 → 2027-06-16 (+140d) | 0% → 90% | 39d → 33.95d |
| CON-LEG101-LR-9590 | Installation of Stand rack 42U- 19" [Local – 01 Segment-01] | 2027-01-31 → 2026-07-01 A (-214d) | 2027-02-02 → 2027-06-16 (+134d) | 0% → 90% | 37d → 33.95d |
| CON-LEG101-LR-9610 | Installation of IP Outdoor CCTV POE Camera,5 MP, Metal Housing [Local – 01 Segment-01] | 2027-02-03 → 2026-07-01 A (-217d) | 2027-02-06 → 2027-06-17 (+131d) | 0% → 90% | 37d → 33.95d |
| CON-LEG101-LR-9690 | Installation of Outdoor PTZ IP66 [Local – 01 Segment-01] | 2027-02-07 → 2026-07-01 A (-221d) | 2027-02-08 → 2027-06-17 (+129d) | 0% → 90% | 37d → 33.95d |
| CON-LEG101-LR-9850 | Installation of Horizontal Power Distribution Unit (min 8 outlets) [Local – 01 Segment-01] | 2027-03-15 → 2026-07-01 A (-257d) | 2027-03-16 → 2027-06-24 (+100d) | 0% → 90% | 19d → 33.95d |
| CON-LEG101-LR-9940 | Installation of Short Range wireless point to point wireless bridge [Local – 01 Segment-01] | 2027-03-17 → 2026-07-01 A (-259d) | 2027-03-18 → 2027-06-24 (+98d) | 0% → 90% | 19d → 33.95d |

| ID | Task | Start | Finish | Complete | Total float |
| --- | --- | --- | --- | --- | --- |
| CON-LEG101-LR-8620 | Installation of Low Voltage Cables for CCTV feeding system and GSM [Local – 01 Segment-01] | 2026-11-29 → 2026-08-29 A (-92d) | 2026-12-02 → 2027-06-13 (+193d) | 0% → 60% | 57d → 33.95d |
| CON-LEG101-LR-9780 | Installation of Security workstation with 1 x 19" LED screen [Local – 01 Segment-01] | 2027-02-14 → 2027-06-17 (+123d) | 2027-02-14 → 2027-06-19 (+125d) |  | 37d → 33.95d |
| CON-LEG101-LR-9790 | Installation of LED Screen 43" (24/7 operation) with Ethernet decoders [Local – 01 Segment-01] | 2027-02-15 → 2027-06-19 (+124d) | 2027-02-16 → 2027-06-21 (+125d) |  | 37d → 33.95d |
| CON-LEG101-LR-9830 | Installation of Network Video Recorder 4k 64 Channel [Local – 01 Segment-01] | 2027-02-27 → 2027-06-21 (+114d) | 2027-02-27 → 2027-06-22 (+115d) |  | 30d → 33.95d |
| CON-LEG101-LR-9840 | Installation of Keypad [Local – 01 Segment-01] | 2027-03-13 → 2027-06-22 (+101d) | 2027-03-14 → 2027-06-24 (+102d) |  | 19d → 33.95d |
| 12 | **Earthing System** | 2027-03-17 → 2027-06-24 (+99d) | 2027-03-18 → 2027-06-27 (+101d) |  |  |
| CON-LEG101-LR-8280 | Installation of Earthing for Distribution panels,SL feeder pillars, KWH, Unit substations and RMU [Local – 01 Segment-01 | 2027-03-17 → 2027-06-24 (+99d) | 2027-03-18 → 2027-06-27 (+101d) |  | 19d → 33.95d |
| 9 | **Road Lighting** | 2026-10-27 → 2026-03-14 (-227d) | 2026-12-30 → 2027-07-08 (+190d) |  |  |
| CON-LEG101-LR-8080 | Installation of Lighting poles [Local – 01 Segment-01] | 2026-10-27 → 2026-03-14 A (-227d) | 2026-11-15 → 2027-06-07 (+204d) | 0% → 90% | 16d → -95.8d |
| CON-LEG101-LR-8180 | Installation of Street Lighting Luminaire [Local – 01 Segment-01] | 2026-11-16 → 2026-05-16 A (-184d) | 2026-11-29 → 2027-06-08 (+191d) | 0% → 90% | 18d → -95.8d |
| CON-LEG101-LR-7420 | Installation of Unit Substation Including concrete foundations and fencing [Local – 01 Segment-01] | 2026-11-29 → 2026-07-05 A (-147d) | 2026-12-06 → 2027-06-17 (+193d) | 0% → 25% | 9d → -96.2d |
| CON-LEG101-LR-8430 | Installation of Street Lighting feeder pillars / Lighting panels [Local – 01 Segment-01] | 2026-11-30 → 2026-07-05 A (-148d) | 2026-12-02 → 2027-06-09 (+189d) | 0% → 90% | 18d → -95.8d |
| CON-LEG101-LR-8330 | Installation of Earthing for Streetlighting feeders for every end pole circuits. [Local – 01 Segment-01] | 2026-12-24 → 2026-08-01 A (-145d) | 2026-12-30 → 2027-07-08 (+190d) | 0% → 40% | 9d → -96.2d |
| CON-LEG101-LR-7500 | Installation of Ring Main Unit RMU [Local – 01 Segment-01] | 2026-12-07 → 2027-06-17 (+192d) | 2026-12-23 → 2027-07-05 (+194d) |  | 9d → -96.2d |
| 2 | **LOCAL - 01 Segment-02 (From 1+066 to 2+133)** | 2026-06-15 → 2026-01-22 (-144d) | 2027-03-06 → 2027-07-14 (+130d) |  |  |
| 5 | **TSE Network** | 2026-06-15 → 2026-01-22 (-144d) | 2027-01-07 → 2026-09-06 (-123d) |  |  |
| 2 | **Pipe Work** | 2026-06-15 → 2026-01-22 (-144d) | 2026-09-26 → 2026-06-02 (-116d) |  |  |
| CON-LEG101-LR-1310 | Excavation for TSE Network [Local – 01 Segment-02] | 2026-06-15 → 2026-01-22 A (-144d) | 2026-06-25 → 2026-01-31 A (-145d) | 0% → 100% | 11d → none |
| CON-LEG101-LR-1420 | Granular bedding for TSE Network [Local – 01 Segment-02] | 2026-06-27 → 2026-01-26 A (-152d) | 2026-07-04 → 2026-05-21 A (-44d) | 0% → 100% | 11d → none |
| CON-LEG101-LR-1530 | Installation of Pipe for TSE Network [Local – 01 Segment-02] | 2026-07-05 → 2026-01-27 A (-159d) | 2026-07-27 → 2026-05-24 A (-64d) | 0% → 100% | 11d → none |
| CON-LEG101-LR-1860 | Granular Surround for TSE Network [Local – 01 Segment-02] | 2026-08-17 → 2026-01-29 A (-200d) | 2026-09-01 → 2026-05-25 A (-99d) | 0% → 100% | 11d → none |
| CON-LEG101-LR-1760 | Concrete encasement, pipe dia 110 mm [Local – 01 Segment-02] | 2026-08-13 → 2026-02-07 A (-187d) | 2026-08-16 → 2026-05-25 A (-83d) | 0% → 100% | 11d → none |
| CON-LEG101-LR-1970 | Installation of Micron Marker Magnetic Tape [Local – 01 Segment-02] | 2026-09-02 → 2026-02-25 A (-189d) | 2026-09-08 → 2026-05-31 A (-100d) | 0% → 100% | 11d → none |
| CON-LEG101-LR-2090 | Backfilling to Subgrade Elevation [Local – 01 Segment-02] | 2026-09-09 → 2026-02-26 A (-195d) | 2026-09-26 → 2026-06-01 A (-117d) | 0% → 100% | 11d → none |
| CON-LEG101-LR-1650 | Testing for TSE Network [Local – 01 Segment-02] | 2026-07-28 → 2026-03-10 A (-140d) | 2026-08-12 → 2026-06-02 A (-71d) | 0% → 100% | 11d → none |
| 1 | **Valves/Chamber** | 2026-09-09 → 2026-03-04 (-189d) | 2027-01-07 → 2026-09-06 (-123d) |  |  |
| CON-LEG101-LR-2200 | Installation of Gate (Sluice) valves (Direct buried) [Local – 01 Segment-02] | 2026-11-07 → 2026-03-04 A (-248d) | 2026-11-17 → 2026-07-08 A (-132d) | 0% → 100% | 14d → none |
| CON-LEG101-LR-2470 | Installation of Fire Hydrant [Local – 01 Segment-02] | 2026-12-28 → 2026-03-04 A (-299d) | 2027-01-07 → 2026-09-06 A (-123d) | 0% → 100% | 14d → none |
| CON-LEG101-LR-2690 | Installation of Air Valve chambers [Local – 01 Segment-02] | 2026-10-05 → 2026-03-15 A (-204d) | 2026-10-28 → 2026-09-05 A (-53d) | 0% → 100% | 21d → none |
| CON-LEG101-LR-2320 | Installation of Wash-out Valves [Local – 01 Segment-02] | 2026-11-18 → 2026-03-16 A (-247d) | 2026-12-09 → 2026-07-08 A (-154d) | 0% → 100% | 14d → none |
| CON-LEG101-LR-2390 | Installation of Air Valves [Local – 01 Segment-02] | 2026-12-10 → 2026-03-16 A (-269d) | 2026-12-27 → 2026-07-08 A (-172d) | 0% → 100% | 14d → none |
| CON-LEG101-LR-2620 | Installation of Wash out chambers [Local – 01 Segment-02] | 2026-09-09 → 2026-04-21 A (-141d) | 2026-10-04 → 2026-09-03 A (-31d) | 0% → 100% | 21d → none |
| 6 | **Public Water Utility Distribution** | 2026-06-15 → 2026-01-22 (-144d) | 2027-03-06 → 2026-09-05 (-182d) |  |  |
| 2 | **Pipe Work** | 2026-06-15 → 2026-01-22 (-144d) | 2026-10-01 → 2026-06-02 (-121d) |  |  |
| CON-LEG101-LR-10050 | Excavation for Public Water Utility Distribution Piping [Local – 01 Segment-02] | 2026-06-15 → 2026-01-22 A (-144d) | 2026-07-04 → 2026-02-05 A (-149d) | 0% → 100% | 6d → none |
| CON-LEG101-LR-10150 | Granular bedding for Public Water Utility Distribution Piping [Local – 01 Segment-02] | 2026-07-05 → 2026-01-26 A (-160d) | 2026-07-19 → 2026-05-21 A (-59d) | 0% → 100% | 6d → none |
| CON-LEG101-LR-10250 | Installation of Pipe for Public Water Utility Distribution Piping [Local – 01 Segment-02] | 2026-07-20 → 2026-01-27 A (-174d) | 2026-08-09 → 2026-05-24 A (-77d) | 0% → 100% | 6d → none |
| CON-LEG101-LR-10550 | Granular Surround for Public Water Utility Distribution Piping [Local – 01 Segment-02] | 2026-09-02 → 2026-02-01 A (-213d) | 2026-09-16 → 2026-05-25 A (-114d) | 0% → 100% | 6d → none |
| CON-LEG101-LR-10650 | Installation of Micron Marker Magnetic Tape [Local – 01 Segment-02] | 2026-09-17 → 2026-02-25 A (-204d) | 2026-09-19 → 2026-05-31 A (-111d) | 0% → 100% | 6d → none |
| CON-LEG101-LR-10750 | Backfilling to Subgrade Elevation [Local – 01 Segment-02] | 2026-09-20 → 2026-02-26 A (-206d) | 2026-10-01 → 2026-06-01 A (-122d) | 0% → 100% | 6d → none |
| CON-LEG101-LR-10450 | Concrete encasement, pipe dia 110 mm [Local – 01 Segment-02] | 2026-08-25 → 2026-03-15 A (-163d) | 2026-09-01 → 2026-05-25 A (-99d) | 0% → 100% | 6d → none |
| CON-LEG101-LR-10350 | Testing for Public Water Utility Distribution Piping [Local – 01 Segment-02] | 2026-08-10 → 2026-03-17 A (-146d) | 2026-08-24 → 2026-06-02 A (-83d) | 0% → 100% | 6d → none |
| 1 | **Valves/Chamber** | 2026-10-29 → 2026-03-15 (-228d) | 2027-03-06 → 2026-09-05 (-182d) |  |  |
| CON-LEG101-LR-1260 | Installation of Air Valve chambers [Local – 01 Segment-02] | 2026-11-23 → 2026-03-15 A (-253d) | 2026-12-16 → 2026-09-05 A (-102d) | 0% → 100% | 30d → none |
| CON-LEG101-LR-1120 | Installation of Wash-out Valves [Local – 01 Segment-02] | 2027-01-11 → 2026-04-01 A (-285d) | 2027-02-03 → 2026-07-08 A (-210d) | 0% → 100% | 30d → none |
| CON-LEG101-LR-1160 | Installation of Air Valves [Local – 01 Segment-02] | 2027-02-04 → 2026-04-01 A (-309d) | 2027-03-06 → 2026-07-08 A (-241d) | 0% → 100% | 30d → none |
| CON-LEG101-LR-1220 | Installation of Wash out chambers [Local – 01 Segment-02] | 2026-10-29 → 2026-04-21 A (-191d) | 2026-11-22 → 2026-09-03 A (-80d) | 0% → 100% | 30d → none |
| CON-LEG101-LR-1010 | Installation of Gate (Sluice) valves (Direct buried) [Local – 01 Segment-02] | 2026-12-17 → 2026-04-29 A (-232d) | 2027-01-10 → 2026-07-08 A (-186d) | 0% → 100% | 30d → none |
| 1 | **Electrical Works** | 2026-10-03 → 2026-04-04 (-182d) | 2027-02-16 → 2027-07-10 (+144d) |  |  |
| 3 | **Low Voltage** | 2026-10-03 → 2026-04-04 (-182d) | 2027-02-16 → 2027-07-10 (+144d) |  |  |
| CON-LEG101-LR-7990 | Installation of Low Voltage Cables Duct Banks [Local – 01 Segment-02] | 2026-10-22 → 2026-04-04 A (-201d) | 2026-10-29 → 2026-04-30 A (-182d) | 0% → 100% | 13d → none |
| CON-LEG101-LR-7790 | Excavation works for Low Voltage Cables [Local – 01 Segment-02] | 2026-10-03 → 2026-06-24 A (-101d) | 2026-10-21 → 2026-07-30 A (-83d) | 0% → 100% | 6d → none |
| CON-LEG101-LR-7890 | Installation of Low Voltage Cables [Local – 01 Segment-02] | 2026-10-31 → 2026-06-25 A (-128d) | 2026-11-18 → 2026-08-01 A (-109d) | 0% → 100% | 13d → none |
| CON-LEG101-LR-8770 | Installation of Earthing System [Local – 01 Segment-02] | 2027-02-03 → 2026-07-06 A (-212d) | 2027-02-16 → 2027-07-10 (+144d) | 0% → 95% | 44d → 23.3d |
| 10 | **Telecommunications** | 2026-10-22 → 2026-04-04 (-201d) | 2027-02-07 → 2026-09-10 (-150d) |  |  |
| CON-LEG101-LR-8840 | Installation of Sand and soil encased duct banks for primary network [Local – 01 Segment-02] | 2026-10-22 → 2026-04-04 A (-201d) | 2026-11-14 → 2026-04-30 A (-198d) | 0% → 100% | 6d → none |
| CON-LEG101-LR-8940 | Installation of Concrete encased duct banks for primary network [Local – 01 Segment-02] | 2026-11-15 → 2026-04-08 A (-221d) | 2026-11-26 → 2026-04-30 A (-210d) | 0% → 100% | 6d → none |
| CON-LEG101-LR-9340 | Installation of Reinforced concrete manhole [Local – 01 Segment-02] | 2027-01-14 → 2026-04-09 A (-280d) | 2027-02-07 → 2026-09-10 A (-150d) | 0% → 100% | 6d → none |
| CON-LEG101-LR-9040 | Installation of Sand encased duct banks for secondary network [Local – 01 Segment-02] | 2026-11-28 → 2026-07-11 A (-140d) | 2026-12-13 → 2026-09-10 A (-94d) | 0% → 100% | 6d → none |
| CON-LEG101-LR-9140 | Installation of Sand and soil encased duct banks, for combined network of primary and secondary [Local – 01 Segment-02 | 2026-12-14 → 2026-07-11 A (-156d) | 2027-01-03 → 2026-09-10 A (-115d) | 0% → 100% | 6d → none |
| CON-LEG101-LR-9240 | Installation of Concrete encased duct banks for for combined network of primary and secondary [Local – 01 Segment-02] | 2027-01-04 → 2026-07-11 A (-177d) | 2027-01-13 → 2026-09-10 A (-125d) | 0% → 100% | 6d → none |
| 11 | **CCTV feeding system and GSM** | 2027-01-04 → 2026-07-04 (-184d) | 2027-02-07 → 2026-09-07 (-153d) |  |  |
| CON-LEG101-LR-8560 | Excavation works for Low Voltage Cables for CCTV feeding system and GSM [Local – 01 Segment-02] | 2027-01-04 → 2026-07-04 A (-184d) | 2027-01-12 → 2026-09-06 A (-128d) | 0% → 100% | 6d → none |
| CON-LEG101-LR-8630 | Installation of Low Voltage Cables for CCTV feeding system and GSM [Local – 01 Segment-02] | 2027-01-13 → 2026-07-04 A (-193d) | 2027-01-21 → 2026-09-07 A (-136d) | 0% → 100% | 6d → none |
| CON-LEG101-LR-9700 | Installation of Outdoor PTZ IP66 [Local – 01 Segment-02] | 2027-01-28 → 2026-07-04 A (-208d) | 2027-01-30 → 2026-09-03 A (-149d) | 0% → 100% | 6d → none |
| CON-LEG101-LR-9950 | Installation of Short Range wireless point to point wireless bridge [Local – 01 Segment-02] | 2027-01-31 → 2026-07-04 A (-211d) | 2027-02-07 → 2026-09-03 A (-157d) | 0% → 100% | 6d → none |
| CON-LEG101-LR-9620 | Installation of IP Outdoor CCTV POE Camera,5 MP, Metal Housing [Local – 01 Segment-02] | 2027-01-23 → 2026-07-08 A (-199d) | 2027-01-27 → 2026-09-03 A (-146d) | 0% → 100% | 6d → none |
| 12 | **Earthing System** | 2027-02-08 → 2026-07-07 (-216d) | 2027-02-18 → 2027-07-14 (+146d) |  |  |
| CON-LEG101-LR-8290 | Installation of Earthing for Distribution panels,SL feeder pillars, KWH, Unit substations and RMU [Local – 01 Segment-02 | 2027-02-08 → 2026-07-07 A (-216d) | 2027-02-18 → 2027-07-14 (+146d) | 0% → 20% | 6d → -96.2d |
| 9 | **Road Lighting** | 2026-11-16 → 2026-03-28 (-233d) | 2026-12-22 → 2027-06-10 (+170d) |  |  |

| ID | Task | Start | Finish | Complete | Total float |
| --- | --- | --- | --- | --- | --- |
| CON-LEG101-LR-8090 | Installation of Lighting poles [Local – 01 Segment-02] | 2026-11-16 → 2026-03-28 A (-233d) | 2026-12-05 → 2026-08-17 A (-110d) | 0% → 100% | 16d → none |
| CON-LEG101-LR-8190 | Installation of Street Lighting Luminaire [Local – 01 Segment-02] | 2026-12-09 → 2026-05-20 A (-203d) | 2026-12-15 → 2026-08-15 A (-122d) | 0% → 100% | 16d → none |
| CON-LEG101-LR-8440 | Installation of Street Lighting feeder pillars / Lighting panels [Local – 01 Segment-02] | 2026-12-06 → 2026-07-05 A (-154d) | 2026-12-08 → 2026-09-10 A (-89d) | 0% → 100% | 16d → none |
| CON-LEG101-LR-8340 | Installation of Earthing for Streetlighting feeders for every end pole circuits. [Local – 01 Segment-02] | 2026-12-16 → 2026-08-05 A (-133d) | 2026-12-22 → 2027-06-10 (+170d) | 0% → 70% | 16d → -95.8d |
| 3 | **LOCAL - 01 Segment-03 (From 2+133 to 3+200)** | 2026-07-15 → 2026-01-14 (-182d) | 2027-03-13 → 2027-07-04 (+113d) |  |  |
| 5 | **TSE Network** | 2026-07-15 → 2026-01-14 (-182d) | 2027-01-14 → 2026-10-27 (-79d) |  |  |
| 2 | **Pipe Work** | 2026-07-15 → 2026-01-14 (-182d) | 2026-11-07 → 2026-04-16 (-205d) |  |  |
| CON-LEG101-LR-1320 | Excavation for TSE Network [Local – 01 Segment-03] | 2026-07-15 → 2026-01-14 A (-182d) | 2026-08-05 → 2026-01-24 A (-193d) | 0% → 100% | 0d → none |
| CON-LEG101-LR-1430 | Granular bedding for TSE Network [Local – 01 Segment-03] | 2026-08-06 → 2026-01-17 A (-201d) | 2026-08-15 → 2026-03-30 A (-138d) | 0% → 100% | 8d → none |
| CON-LEG101-LR-1550 | Installation of Pipe for TSE Network [Local – 01 Segment-03] | 2026-08-16 → 2026-01-19 A (-209d) | 2026-09-07 → 2026-03-31 A (-160d) | 0% → 100% | 8d → none |
| CON-LEG101-LR-1870 | Granular Surround for TSE Network [Local – 01 Segment-03] | 2026-09-29 → 2026-01-29 A (-243d) | 2026-10-14 → 2026-04-04 A (-193d) | 0% → 100% | 8d → none |
| CON-LEG101-LR-1980 | Installation of Micron Marker Magnetic Tape [Local – 01 Segment-03] | 2026-10-15 → 2026-02-25 A (-232d) | 2026-10-21 → 2026-04-05 A (-199d) | 0% → 100% | 8d → none |
| CON-LEG101-LR-2100 | Backfilling to Subgrade Elevation [Local – 01 Segment-03] | 2026-10-22 → 2026-02-26 A (-238d) | 2026-11-07 → 2026-04-06 A (-215d) | 0% → 100% | 8d → none |
| CON-LEG101-LR-1770 | Concrete encasement, pipe dia 110 mm [Local – 01 Segment-03] | 2026-09-26 → 2026-04-01 A (-178d) | 2026-09-28 → 2026-04-02 A (-179d) | 0% → 100% | 8d → none |
| CON-LEG101-LR-1660 | Testing for TSE Network [Local – 01 Segment-03] | 2026-09-08 → 2026-04-14 A (-147d) | 2026-09-24 → 2026-04-16 A (-161d) | 0% → 100% | 8d → none |
| 1 | **Valves/Chamber** | 2026-11-08 → 2026-03-04 (-249d) | 2027-01-14 → 2026-10-27 (-79d) |  |  |
| CON-LEG101-LR-2210 | Installation of Gate (Sluice) valves (Direct buried) [Local – 01 Segment-03] | 2026-11-25 → 2026-03-04 A (-266d) | 2026-12-16 → 2026-07-09 A (-160d) | 0% → 100% | 8d → none |
| CON-LEG101-LR-2480 | Installation of Fire Hydrant [Local – 01 Segment-03] | 2027-01-04 → 2026-03-04 A (-306d) | 2027-01-14 → 2026-09-29 A (-107d) | 0% → 100% | 8d → none |
| CON-LEG101-LR-15040 | Installation of Air Valve chambers [Local – 01 Segment-03] | 2026-11-25 → 2026-04-01 A (-238d) | 2026-12-06 → 2026-10-27 (-40d) | 0% → 95% | 18d → 99.4d |
| CON-LEG101-LR-15050 | Installation of Air Valves [Local – 01 Segment-03] | 2026-12-07 → 2026-04-01 A (-250d) | 2026-12-17 → 2026-07-09 A (-161d) | 0% → 100% | 18d → none |
| CON-LEG101-LR-2330 | Installation of Wash-out Valves [Local – 01 Segment-03] | 2026-12-17 → 2026-04-01 A (-260d) | 2027-01-03 → 2026-07-09 A (-178d) | 0% → 100% | 8d → none |
| CON-LEG101-LR-2630 | Installation of Wash out chambers [Local – 01 Segment-03] | 2026-11-08 → 2026-04-27 A (-195d) | 2026-11-24 → 2026-10-26 (-29d) | 0% → 95% | 8d → 99.4d |
| 6 | **Public Water Utility Distribution** | 2026-08-06 → 2026-01-14 (-204d) | 2027-01-20 → 2026-10-27 (-85d) |  |  |
| 2 | **Pipe Work** | 2026-08-06 → 2026-01-14 (-204d) | 2026-11-18 → 2026-04-11 (-221d) |  |  |
| CON-LEG101-LR-10060 | Excavation for Public Water Utility Distribution Piping [Local – 01 Segment-03] | 2026-08-06 → 2026-01-14 A (-204d) | 2026-08-25 → 2026-01-24 A (-213d) | 0% → 100% | 0d → none |
| CON-LEG101-LR-10160 | Granular bedding for Public Water Utility Distribution Piping [Local – 01 Segment-03] | 2026-08-26 → 2026-01-17 A (-221d) | 2026-09-09 → 2026-03-30 A (-163d) | 0% → 100% | 0d → none |
| CON-LEG101-LR-10260 | Installation of Pipe for Public Water Utility Distribution Piping [Local – 01 Segment-03] | 2026-09-10 → 2026-01-19 A (-234d) | 2026-10-01 → 2026-03-31 A (-184d) | 0% → 100% | 0d → none |
| CON-LEG101-LR-10460 | Concrete encasement, pipe dia 110 mm [Local – 01 Segment-03] | 2026-10-18 → 2026-02-10 A (-250d) | 2026-10-20 → 2026-04-01 A (-202d) | 0% → 100% | 0d → none |
| CON-LEG101-LR-10560 | Granular Surround for Public Water Utility Distribution Piping [Local – 01 Segment-03] | 2026-10-21 → 2026-02-18 A (-245d) | 2026-11-04 → 2026-04-02 A (-216d) | 0% → 100% | 0d → none |
| CON-LEG101-LR-10660 | Installation of Micron Marker Magnetic Tape [Local – 01 Segment-03] | 2026-11-05 → 2026-02-25 A (-253d) | 2026-11-07 → 2026-04-04 A (-217d) | 0% → 100% | 0d → none |
| CON-LEG101-LR-10760 | Backfilling to Subgrade Elevation [Local – 01 Segment-03] | 2026-11-08 → 2026-02-26 A (-255d) | 2026-11-18 → 2026-04-05 A (-227d) | 0% → 100% | 0d → none |
| CON-LEG101-LR-10360 | Testing for Public Water Utility Distribution Piping [Local – 01 Segment-03] | 2026-10-03 → 2026-03-10 A (-207d) | 2026-10-17 → 2026-04-11 A (-189d) | 0% → 100% | 0d → none |
| 1 | **Valves/Chamber** | 2026-11-08 → 2026-04-01 (-221d) | 2027-01-20 → 2026-10-27 (-85d) |  |  |
| CON-LEG101-LR-1130 | Installation of Wash-out Valves [Local – 01 Segment-03] | 2027-01-03 → 2026-04-01 A (-277d) | 2027-01-11 → 2026-07-09 A (-186d) | 0% → 100% | 13d → none |
| CON-LEG101-LR-1170 | Installation of Air Valves [Local – 01 Segment-03] | 2027-01-12 → 2026-04-01 A (-286d) | 2027-01-20 → 2026-07-09 A (-195d) | 0% → 100% | 13d → none |
| CON-LEG101-LR-1270 | Installation of Air Valve chambers [Local – 01 Segment-03] | 2026-12-01 → 2026-04-01 A (-244d) | 2026-12-23 → 2026-10-27 (-57d) | 0% → 95% | 13d → 171.5d |
| CON-LEG101-LR-1020 | Installation of Gate (Sluice) valves (Direct buried) [Local – 01 Segment-03] | 2026-12-24 → 2026-04-18 A (-250d) | 2027-01-02 → 2026-07-09 A (-177d) | 0% → 100% | 13d → none |
| CON-LEG101-LR-1230 | Installation of Wash out chambers [Local – 01 Segment-03] | 2026-11-08 → 2026-04-27 A (-195d) | 2026-11-30 → 2026-10-26 (-35d) | 0% → 95% | 13d → 171.5d |
| 1 | **Electrical Works** | 2026-11-19 → 2026-05-31 (-172d) | 2027-02-16 → 2026-09-17 (-152d) |  |  |
| 3 | **Low Voltage** | 2026-11-19 → 2026-05-31 (-172d) | 2027-02-16 → 2026-09-17 (-152d) |  |  |
| CON-LEG101-LR-8000 | Installation of Low Voltage Cables Duct Banks [Local – 01 Segment-03] | 2026-12-09 → 2026-05-31 A (-192d) | 2026-12-16 → 2026-06-04 A (-195d) | 0% → 100% | 6d → none |
| CON-LEG101-LR-7800 | Excavation works for Low Voltage Cables [Local – 01 Segment-03] | 2026-11-19 → 2026-08-12 A (-99d) | 2026-12-08 → 2026-09-15 A (-84d) | 0% → 100% | 0d → none |
| CON-LEG101-LR-7900 | Installation of Low Voltage Cables [Local – 01 Segment-03] | 2026-12-17 → 2026-08-12 A (-127d) | 2027-01-05 → 2026-09-16 A (-111d) | 0% → 100% | 6d → none |
| CON-LEG101-LR-8780 | Installation of Earthing System [Local – 01 Segment-03] | 2027-02-03 → 2026-08-12 A (-175d) | 2027-02-16 → 2026-09-17 A (-152d) | 0% → 100% | 44d → none |
| 10 | **Telecommunications** | 2026-11-19 → 2026-05-31 (-172d) | 2027-03-03 → 2027-06-24 (+113d) |  |  |
| CON-LEG101-LR-9250 | Installation of Concrete encased duct banks for for combined network of primary and secondary [Local – 01 Segment-03] | 2027-01-27 → 2026-05-31 A (-241d) | 2027-02-06 → 2026-06-04 A (-247d) | 0% → 100% | 6d → none |
| CON-LEG101-LR-9350 | Installation of Reinforced concrete manhole [Local – 01 Segment-03] | 2027-02-07 → 2026-08-22 A (-169d) | 2027-03-03 → 2027-06-24 (+113d) | 0% → 50% | 6d → -24.6d |
| CON-LEG101-LR-8850 | Installation of Sand and soil encased duct banks for primary network [Local – 01 Segment-03] | 2026-11-19 → 2026-09-05 A (-75d) | 2026-12-06 → 2027-05-05 (+150d) | 0% → 30% | 7d → -24.6d |
| CON-LEG101-LR-8950 | Installation of Concrete encased duct banks for primary network [Local – 01 Segment-03] | 2026-12-07 → 2026-09-05 A (-93d) | 2026-12-19 → 2027-05-19 (+151d) | 0% → 30% | 7d → -24.6d |
| CON-LEG101-LR-9050 | Installation of Sand encased duct banks for secondary network [Local – 01 Segment-03] | 2026-12-20 → 2026-09-05 A (-106d) | 2027-01-04 → 2027-05-30 (+146d) | 0% → 30% | 7d → -24.6d |
| CON-LEG101-LR-9150 | Installation of Sand and soil encased duct banks, for combined network of primary and secondary [Local – 01 Segment-03 | 2027-01-06 → 2026-09-05 A (-123d) | 2027-01-26 → 2027-06-14 (+139d) | 0% → 30% | 6d → -24.6d |
| 11 | **CCTV feeding system and GSM** | 2027-01-05 → 2026-07-06 (-183d) | 2027-02-23 → 2026-09-01 (-175d) |  |  |
| CON-LEG101-LR-8570 | Excavation works for Low Voltage Cables for CCTV feeding system and GSM [Local – 01 Segment-03] | 2027-01-05 → 2026-07-06 A (-183d) | 2027-01-16 → 2026-09-01 A (-137d) | 0% → 100% | 17d → none |
| CON-LEG101-LR-8640 | Installation of Low Voltage Cables for CCTV feeding system and GSM [Local – 01 Segment-03] | 2027-01-21 → 2026-07-06 A (-199d) | 2027-02-01 → 2026-09-01 A (-153d) | 0% → 100% | 13d → none |
| CON-LEG101-LR-9710 | Installation of Outdoor PTZ IP66 [Local – 01 Segment-03] | 2027-02-08 → 2026-07-06 A (-217d) | 2027-02-14 → 2026-09-01 A (-166d) | 0% → 100% | 13d → none |
| CON-LEG101-LR-9960 | Installation of Short Range wireless point to point wireless bridge [Local – 01 Segment-03] | 2027-02-15 → 2026-07-06 A (-224d) | 2027-02-23 → 2026-09-01 A (-175d) | 0% → 100% | 13d → none |
| CON-LEG101-LR-9630 | Installation of IP Outdoor CCTV POE Camera,5 MP, Metal Housing [Local – 01 Segment-03] | 2027-02-02 → 2026-07-11 A (-206d) | 2027-02-07 → 2026-09-01 A (-159d) | 0% → 100% | 13d → none |
| 12 | **Earthing System** | 2027-03-04 → 2027-06-24 (+112d) | 2027-03-13 → 2027-07-04 (+113d) |  |  |
| CON-LEG101-LR-8300 | Installation of Earthing for Distribution panels,SL feeder pillars, KWH, Unit substations and RMU [Local – 01 Segment-03 | 2027-03-04 → 2027-06-24 (+112d) | 2027-03-13 → 2027-07-04 (+113d) |  | 6d → -24.6d |
| 9 | **Road Lighting** | 2026-12-09 → 2026-03-15 (-269d) | 2027-01-12 → 2027-06-16 (+155d) |  |  |
| CON-LEG101-LR-8100 | Installation of Lighting poles [Local – 01 Segment-03] | 2026-12-09 → 2026-03-15 A (-269d) | 2026-12-28 → 2027-04-25 (+118d) | 0% → 90% | 0d → -74.3d |
| CON-LEG101-LR-8200 | Installation of Street Lighting Luminaire [Local – 01 Segment-03] | 2026-12-29 → 2026-08-12 A (-139d) | 2027-01-04 → 2027-04-26 (+112d) | 0% → 90% | 5d → -60.1d |
| CON-LEG101-LR-8450 | Installation of Street Lighting feeder pillars / Lighting panels [Local – 01 Segment-03] | 2026-12-29 → 2026-08-12 A (-139d) | 2027-01-05 → 2027-05-30 (+145d) | 0% → 90% | 4d → -85.5d |
| CON-LEG101-LR-8350 | Installation of Earthing for Streetlighting feeders for every end pole circuits. [Local – 01 Segment-03] | 2027-01-06 → 2026-09-05 A (-123d) | 2027-01-12 → 2027-06-16 (+155d) | 0% → 30% | 4d → -95.8d |
| 2 | **Local – 02** | 2026-06-16 → 2026-02-04 (-132d) | 2027-03-06 → 2027-06-23 (+109d) |  |  |
| 5 | **TSE Network** | 2026-06-16 → 2026-02-04 (-132d) | 2027-01-14 → 2027-06-06 (+143d) |  |  |
| 2 | **Pipe Work** | 2026-06-16 → 2026-02-04 (-132d) | 2026-09-19 → 2026-05-21 (-121d) |  |  |
| CON-LEG101-LR-1330 | Excavation for TSE Network [Local – 02 ] | 2026-06-16 → 2026-02-04 A (-132d) | 2026-06-30 → 2026-02-15 A (-135d) | 0% → 100% | 6d → none |
| CON-LEG101-LR-1440 | Granular bedding for TSE Network [Local – 02 ] | 2026-07-01 → 2026-02-05 A (-146d) | 2026-07-12 → 2026-04-22 A (-81d) | 0% → 100% | 6d → none |
| CON-LEG101-LR-1560 | Installation of Pipe for TSE Network [Local – 02 ] | 2026-07-13 → 2026-02-05 A (-158d) | 2026-07-28 → 2026-04-23 A (-96d) | 0% → 100% | 6d → none |

| ID | Task | Start | Finish | Complete | Total float |
| --- | --- | --- | --- | --- | --- |
| CON-LEG101-LR-1880 | Granular Surround for TSE Network [Local – 02 ] | 2026-08-12 → 2026-02-14 A (-179d) | 2026-08-23 → 2026-05-19 A (-96d) | 0% → 100% | 6d → none |
| CON-LEG101-LR-1780 | Concrete encasement, pipe dia 110 mm [Local – 02 ] | 2026-08-10 → 2026-03-15 A (-148d) | 2026-08-11 → 2026-05-18 A (-85d) | 0% → 100% | 6d → none |
| CON-LEG101-LR-2000 | Installation of Micron Marker Magnetic Tape [Local – 02 ] | 2026-08-24 → 2026-03-16 A (-161d) | 2026-08-27 → 2026-05-20 A (-99d) | 0% → 100% | 6d → none |
| CON-LEG101-LR-2110 | Backfilling to Subgrade Elevation [Local – 02 ] | 2026-08-29 → 2026-03-17 A (-165d) | 2026-09-19 → 2026-05-21 A (-121d) | 0% → 100% | 6d → none |
| CON-LEG101-LR-1670 | Testing for TSE Network [Local – 02 ] | 2026-07-29 → 2026-03-18 A (-133d) | 2026-08-09 → 2026-05-21 A (-80d) | 0% → 100% | 6d → none |
| 1 | **Valves/Chamber** | 2026-07-29 → 2026-04-29 (-91d) | 2027-01-14 → 2027-06-06 (+143d) |  |  |
| CON-LEG101-LR-2220 | Installation of Gate (Sluice) valves (Direct buried) [Local – 02 ] | 2026-08-23 → 2026-04-29 A (-116d) | 2026-09-06 → 2026-08-05 A (-32d) | 0% → 100% | 15d → none |
| CON-LEG101-LR-2410 | Installation of Wash out Valves [Local – 02 ] | 2026-08-23 → 2026-04-29 A (-116d) | 2026-09-08 → 2026-10-27 (+49d) | 0% → 95% | 13d → 55.1d |
| CON-LEG101-LR-2710 | Installation of Wash out chambers [Local – 02 ] | 2026-07-29 → 2026-04-29 A (-91d) | 2026-08-22 → 2026-10-27 (+66d) | 0% → 95% | 13d → 55.1d |
| CON-LEG101-LR-2490 | Installation of Fire Hydrant [Local – 02 ] | 2027-01-04 → 2026-05-20 A (-229d) | 2027-01-14 → 2027-06-06 (+143d) | 0% → 95% | 8d → -81.35d |
| 6 | **Public Water Utility Distribution** | 2026-07-01 → 2026-02-04 (-147d) | 2026-10-06 → 2026-10-28 (+22d) |  |  |
| 2 | **Pipe Work** | 2026-07-01 → 2026-02-04 (-147d) | 2026-09-14 → 2026-05-18 (-119d) |  |  |
| CON-LEG101-LR-10070 | Excavation for Public Water Utility Distribution Piping [Local – 02 ] | 2026-07-01 → 2026-02-04 A (-147d) | 2026-07-14 → 2026-02-15 A (-149d) | 0% → 100% | 10d → none |
| CON-LEG101-LR-10170 | Granular bedding for Public Water Utility Distribution Piping [Local – 02 ] | 2026-07-15 → 2026-02-05 A (-160d) | 2026-07-25 → 2026-04-22 A (-94d) | 0% → 100% | 10d → none |
| CON-LEG101-LR-10270 | Installation of Pipe for Public Water Utility Distribution Piping [Local – 02 ] | 2026-07-26 → 2026-02-05 A (-171d) | 2026-08-09 → 2026-04-23 A (-108d) | 0% → 100% | 10d → none |
| CON-LEG101-LR-10570 | Granular Surround for Public Water Utility Distribution Piping [Local – 02 ] | 2026-08-23 → 2026-02-14 A (-190d) | 2026-09-01 → 2026-05-16 A (-108d) | 0% → 100% | 10d → none |
| CON-LEG101-LR-10470 | Concrete encasement, pipe dia 110 mm [Local – 02 ] | 2026-08-20 → 2026-03-15 A (-158d) | 2026-08-22 → 2026-05-16 A (-98d) | 0% → 100% | 10d → none |
| CON-LEG101-LR-10670 | Installation of Micron Marker Magnetic Tape [Local – 02 ] | 2026-09-02 → 2026-03-16 A (-170d) | 2026-09-05 → 2026-05-17 A (-111d) | 0% → 100% | 10d → none |
| CON-LEG101-LR-10770 | Backfilling to Subgrade Elevation [Local – 02 ] | 2026-09-06 → 2026-03-17 A (-173d) | 2026-09-14 → 2026-05-18 A (-119d) | 0% → 100% | 10d → none |
| CON-LEG101-LR-10370 | Testing for Public Water Utility Distribution Piping [Local – 02 ] | 2026-08-10 → 2026-05-13 A (-89d) | 2026-08-19 → 2026-05-14 A (-97d) | 0% → 100% | 10d → none |
| 1 | **Valves/Chamber** | 2026-08-10 → 2026-04-01 (-131d) | 2026-10-06 → 2026-10-28 (+22d) |  |  |
| CON-LEG101-LR-15080 | Installation of Air Valve chambers [Local – 02 ] | 2026-09-02 → 2026-04-01 A (-154d) | 2026-09-26 → 2026-10-27 (+31d) | 0% → 95% | 16d → 81.45d |
| CON-LEG101-LR-1030 | Installation of Gate (Sluice) valves (Direct buried) [Local – 02 ] | 2026-09-29 → 2026-04-29 A (-153d) | 2026-10-06 → 2026-10-28 (+22d) | 0% → 95% | 14d → 81.45d |
| CON-LEG101-LR-15070 | Installation of Wash out chambers [Local – 02 ] | 2026-08-10 → 2026-04-29 A (-103d) | 2026-09-01 → 2026-10-26 (+55d) | 0% → 95% | 16d → 55.9d |
| CON-LEG101-LR-15090 | Installation of Wash-out Valves [Local – 02 ] | 2026-09-09 → 2026-04-29 A (-133d) | 2026-09-17 → 2026-08-05 A (-43d) | 0% → 100% | 13d → none |
| CON-LEG101-LR-15100 | Installation of Air Valves [Local – 02 ] | 2026-09-19 → 2026-04-29 A (-143d) | 2026-09-28 → 2026-08-06 A (-53d) | 0% → 100% | 14d → none |
| 1 | **Electrical Works** | 2026-09-20 → 2026-05-31 (-112d) | 2027-03-06 → 2027-06-21 (+107d) |  |  |
| 3 | **Low Voltage** | 2026-09-20 → 2026-05-31 (-112d) | 2027-03-06 → 2027-06-21 (+107d) |  |  |
| CON-LEG101-LR-8010 | Installation of Low Voltage Cables Duct Banks [Local – 02 ] | 2026-10-10 → 2026-05-31 A (-132d) | 2026-10-15 → 2026-06-11 A (-126d) | 0% → 100% | 12d → none |
| CON-LEG101-LR-7810 | Excavation works for Low Voltage Cables [Local – 02 ] | 2026-09-20 → 2026-07-21 A (-61d) | 2026-10-08 → 2026-07-25 A (-75d) | 0% → 100% | 6d → none |
| CON-LEG101-LR-7910 | Installation of Low Voltage Cables [Local – 02 ] | 2026-10-17 → 2026-07-24 A (-85d) | 2026-11-01 → 2026-08-01 A (-92d) | 0% → 100% | 12d → none |
| CON-LEG101-LR-8490 | Installation of Low Voltage Distribution Panel [Local – 02 ] | 2026-11-07 → 2027-05-30 (+204d) | 2026-11-17 → 2027-06-09 (+204d) |  | 8d → -92.2d |
| CON-LEG101-LR-8540 | Installation of KWH Meters Walls [Local – 02 ] | 2027-02-24 → 2027-06-10 (+106d) | 2027-03-03 → 2027-06-19 (+108d) |  | 30d → 39.15d |
| CON-LEG101-LR-8790 | Installation of Earthing System [Local – 02 ] | 2027-03-04 → 2027-06-19 (+107d) | 2027-03-06 → 2027-06-21 (+107d) |  | 30d → 39.15d |
| 10 | **Telecommunications** | 2026-10-10 → 2026-05-31 (-132d) | 2027-01-10 → 2027-06-12 (+153d) |  |  |
| CON-LEG101-LR-8860 | Installation of Sand and soil encased duct banks for primary network [Local – 02 ] | 2026-10-10 → 2026-05-31 A (-132d) | 2026-10-29 → 2026-07-01 A (-120d) | 0% → 100% | 6d → none |
| CON-LEG101-LR-9260 | Installation of Concrete encased duct banks for for combined network of primary and secondary [Local – 02 ] | 2026-12-09 → 2026-05-31 A (-192d) | 2026-12-16 → 2026-06-13 A (-186d) | 0% → 100% | 6d → none |
| CON-LEG101-LR-9360 | Installation of Reinforced concrete manhole [Local – 02 ] | 2026-12-17 → 2026-05-31 A (-200d) | 2027-01-10 → 2026-07-01 A (-193d) | 0% → 100% | 6d → none |
| CON-LEG101-LR-8960 | Installation of Concrete encased duct banks for primary network [Local – 02 ] | 2026-10-31 → 2026-08-25 A (-67d) | 2026-11-08 → 2027-03-24 (+136d) | 0% → 90% | 6d → -31d |
| CON-LEG101-LR-9060 | Installation of Sand encased duct banks for secondary network [Local – 02 ] | 2026-11-09 → 2026-08-25 A (-76d) | 2026-11-19 → 2027-03-25 (+126d) | 0% → 90% | 6d → -31d |
| CON-LEG101-LR-9160 | Installation of Sand and soil encased duct banks, for combined network of primary and secondary [Local – 02 ] | 2026-11-21 → 2026-08-25 A (-88d) | 2026-12-08 → 2027-06-12 (+186d) | 0% → 90% | 6d → -92.2d |
| 11 | **CCTV feeding system and GSM** | 2026-10-31 → 2026-06-01 (-152d) | 2027-01-09 → 2027-06-07 (+149d) |  |  |
| CON-LEG101-LR-9890 | Installation of 25 Meters pole for CCTV Cameras [Local – 02 ] | 2026-12-24 → 2026-06-01 A (-206d) | 2026-12-31 → 2026-07-16 A (-168d) | 0% → 100% | 7d → none |
| CON-LEG101-LR-8580 | Excavation works for Low Voltage Cables for CCTV feeding system and GSM [Local – 02 ] | 2026-10-31 → 2026-07-11 A (-112d) | 2026-11-10 → 2026-09-13 A (-58d) | 0% → 100% | 7d → none |
| CON-LEG101-LR-8650 | Installation of Low Voltage Cables for CCTV feeding system and GSM [Local – 02 ] | 2026-11-11 → 2026-07-11 A (-123d) | 2026-11-18 → 2026-09-14 A (-65d) | 0% → 100% | 7d → none |
| CON-LEG101-LR-9470 | Installation of 8POE ports Industrial Switches for remote poles [Local – 02 ] | 2026-11-19 → 2026-07-11 A (-131d) | 2026-11-26 → 2027-04-26 (+151d) | 0% → 90% | 7d → -65.6d |
| CON-LEG101-LR-9570 | Installation of Server [Local – 02 ] | 2026-11-28 → 2026-07-11 A (-140d) | 2026-12-05 → 2027-04-27 (+143d) | 0% → 90% | 7d → -65.6d |
| CON-LEG101-LR-9640 | Installation of IP Outdoor CCTV POE Camera,5 MP, Metal Housing [Local – 02 ] | 2026-12-06 → 2026-07-11 A (-148d) | 2026-12-13 → 2027-04-28 (+136d) | 0% → 90% | 7d → -65.6d |
| CON-LEG101-LR-9720 | Installation of Outdoor PTZ IP66 [Local – 02 ] | 2026-12-14 → 2026-07-11 A (-156d) | 2026-12-15 → 2027-04-28 (+134d) | 0% → 90% | 7d → -65.6d |
| CON-LEG101-LR-9970 | Installation of Short Range wireless point to point wireless bridge [Local – 02 ] | 2027-01-02 → 2026-07-11 A (-175d) | 2027-01-09 → 2027-06-07 (+149d) | 0% → 90% | 7d → -88.3d |
| CON-LEG101-LR-9800 | Installation of LED Screen 43" (24/7 operation) with Ethernet decoders [Local – 02 ] | 2026-12-16 → 2027-05-30 (+165d) | 2026-12-23 → 2027-06-06 (+165d) |  | 7d → -88.3d |
| 12 | **Earthing System** | 2027-01-18 → 2027-06-16 (+149d) | 2027-01-24 → 2027-06-23 (+150d) |  |  |
| CON-LEG101-LR-8310 | Installation of Earthing for Distribution panels,SL feeder pillars, KWH, Unit substations and RMU [Local – 02 ] | 2027-01-18 → 2027-06-16 (+149d) | 2027-01-24 → 2027-06-23 (+150d) |  | 0d → -95.8d |
| 9 | **Road Lighting** | 2026-12-09 → 2026-03-15 (-269d) | 2027-01-23 → 2027-06-19 (+147d) |  |  |
| CON-LEG101-LR-8110 | Installation of Lighting poles [Local – 02 ] | 2026-12-09 → 2026-03-15 A (-269d) | 2026-12-16 → 2026-08-17 A (-121d) | 0% → 100% | 0d → none |
| CON-LEG101-LR-8210 | Installation of Street Lighting Luminaire [Local – 02 ] | 2026-12-17 → 2026-07-05 A (-165d) | 2026-12-24 → 2026-08-17 A (-129d) | 0% → 100% | 0d → none |
| CON-LEG101-LR-8460 | Installation of Street Lighting feeder pillars / Lighting panels [Local – 02 ] | 2027-01-10 → 2026-07-08 A (-186d) | 2027-01-17 → 2027-06-14 (+148d) | 0% → 90% | 0d → -94.3d |
| CON-LEG101-LR-8360 | Installation of Earthing for Streetlighting feeders for every end pole circuits. [Local – 02 ] | 2027-01-18 → 2026-08-08 A (-163d) | 2027-01-23 → 2027-06-19 (+147d) | 0% → 50% | 0d → -95.8d |
| CON-LEG101-LR-7430 | Installation of Unit Substation Including concrete foundations and fencing [Local – 02 ] | 2026-12-17 → 2027-04-26 (+130d) | 2026-12-24 → 2027-05-03 (+130d) |  | 0d → -76.3d |
| CON-LEG101-LR-7510 | Installation of Ring Main Unit RMU [Local – 02 ] | 2026-12-26 → 2027-05-30 (+155d) | 2027-01-09 → 2027-06-13 (+155d) |  | 0d → -94.3d |
| 3 | **Local – 03** | 2026-06-20 → 2026-02-05 (-135d) | 2027-03-07 → 2027-08-02 (+148d) |  |  |
| 5 | **TSE Network** | 2026-06-20 → 2026-02-05 (-135d) | 2027-01-20 → 2027-06-06 (+137d) |  |  |
| 2 | **Pipe Work** | 2026-06-20 → 2026-02-05 (-135d) | 2026-08-18 → 2026-06-30 (-49d) |  |  |
| CON-LEG101-LR-1340 | Excavation for TSE Network [Local – 03 ] | 2026-06-20 → 2026-02-05 A (-135d) | 2026-06-25 → 2026-02-16 A (-129d) | 0% → 100% | 11d → none |
| CON-LEG101-LR-1460 | Granular bedding for TSE Network [Local – 03 ] | 2026-06-27 → 2026-02-15 A (-132d) | 2026-07-04 → 2026-03-03 A (-123d) | 0% → 100% | 11d → none |
| CON-LEG101-LR-1570 | Installation of Pipe for TSE Network [Local – 03 ] | 2026-07-05 → 2026-02-18 A (-137d) | 2026-07-19 → 2026-04-15 A (-95d) | 0% → 100% | 11d → none |
| CON-LEG101-LR-1890 | Granular Surround for TSE Network [Local – 03 ] | 2026-08-01 → 2026-02-25 A (-157d) | 2026-08-08 → 2026-04-30 A (-100d) | 0% → 100% | 11d → none |
| CON-LEG101-LR-1680 | Testing for TSE Network [Local – 03 ] | 2026-07-20 → 2026-04-29 A (-82d) | 2026-07-27 → 2026-04-29 A (-89d) | 0% → 100% | 11d → none |
| CON-LEG101-LR-1790 | Concrete encasement, pipe dia 110 mm [Local – 03 ] | 2026-07-28 → 2026-04-30 A (-89d) | 2026-07-30 → 2026-04-30 A (-91d) | 0% → 100% | 11d → none |
| CON-LEG101-LR-2010 | Installation of Micron Marker Magnetic Tape [Local – 03 ] | 2026-08-09 → 2026-05-02 A (-99d) | 2026-08-11 → 2026-05-02 A (-101d) | 0% → 100% | 14d → none |

| ID | Task | Start | Finish | Complete | Total float |
| --- | --- | --- | --- | --- | --- |
| CON-LEG101-LR-2120 | Backfilling to Subgrade Elevation [Local – 03 ] | 2026-08-12 → 2026-05-03 A (-101d) | 2026-08-18 → 2026-06-30 A (-49d) | 0% → 100% | 14d → none |
| 1 | **Valves/Chamber** | 2026-09-19 → 2026-04-15 (-157d) | 2027-01-20 → 2027-06-06 (+137d) |  |  |
| CON-LEG101-LR-2230 | Installation of Gate (Sluice) valves (Direct buried) [Local – 03 ] | 2026-11-08 → 2026-04-15 A (-207d) | 2026-11-24 → 2026-08-05 A (-111d) | 0% → 100% | 22d → none |
| CON-LEG101-LR-2340 | Installation of Wash-out Valves [Local – 03 ] | 2026-11-25 → 2026-04-15 A (-224d) | 2026-12-12 → 2026-08-05 A (-129d) | 0% → 100% | 22d → none |
| CON-LEG101-LR-2420 | Installation of Air Valves [Local – 03 ] | 2026-12-13 → 2026-04-15 A (-242d) | 2026-12-29 → 2026-08-05 A (-146d) | 0% → 100% | 22d → none |
| CON-LEG101-LR-2500 | Installation of Fire Hydrant [Local – 03 ] | 2027-01-04 → 2026-04-15 A (-264d) | 2027-01-20 → 2027-06-06 (+137d) | 0% → 95% | 18d → -81.35d |
| CON-LEG101-LR-2720 | Installation of Air Valve chambers [Local – 03 ] | 2026-10-14 → 2026-04-15 A (-182d) | 2026-11-07 → 2026-10-29 (-9d) | 0% → 95% | 13d → 55.1d |
| CON-LEG101-LR-2640 | Installation of Wash out chambers [Local – 03 ] | 2026-09-19 → 2026-04-29 A (-143d) | 2026-10-13 → 2026-10-28 (+15d) | 0% → 95% | 13d → 55.1d |
| 6 | **Public Water Utility Distribution** | 2026-08-09 → 2026-02-05 (-185d) | 2026-12-19 → 2026-10-31 (-49d) |  |  |
| 2 | **Pipe Work** | 2026-08-09 → 2026-02-05 (-185d) | 2026-10-12 → 2026-06-30 (-104d) |  |  |
| CON-LEG101-LR-10080 | Excavation for Public Water Utility Distribution Piping [Local – 03 ] | 2026-08-09 → 2026-02-05 A (-185d) | 2026-08-19 → 2026-02-16 A (-184d) | 0% → 100% | 11d → none |
| CON-LEG101-LR-10180 | Granular bedding for Public Water Utility Distribution Piping [Local – 03 ] | 2026-08-20 → 2026-02-15 A (-186d) | 2026-08-27 → 2026-03-03 A (-177d) | 0% → 100% | 11d → none |
| CON-LEG101-LR-10280 | Installation of Pipe for Public Water Utility Distribution Piping [Local – 03 ] | 2026-08-29 → 2026-02-18 A (-192d) | 2026-09-10 → 2026-03-14 A (-180d) | 0% → 100% | 11d → none |
| CON-LEG101-LR-10580 | Granular Surround for Public Water Utility Distribution Piping [Local – 03 ] | 2026-09-24 → 2026-02-25 A (-211d) | 2026-10-01 → 2026-04-30 A (-154d) | 0% → 100% | 11d → none |
| CON-LEG101-LR-10380 | Testing for Public Water Utility Distribution Piping [Local – 03 ] | 2026-09-12 → 2026-04-29 A (-136d) | 2026-09-19 → 2026-04-29 A (-143d) | 0% → 100% | 11d → none |
| CON-LEG101-LR-10480 | Concrete encasement, pipe dia 110 mm [Local – 03 ] | 2026-09-20 → 2026-04-30 A (-143d) | 2026-09-22 → 2026-04-30 A (-145d) | 0% → 100% | 11d → none |
| CON-LEG101-LR-10680 | Installation of Micron Marker Magnetic Tape [Local – 03 ] | 2026-10-03 → 2026-05-02 A (-154d) | 2026-10-05 → 2026-06-25 A (-102d) | 0% → 100% | 11d → none |
| CON-LEG101-LR-10780 | Backfilling to Subgrade Elevation [Local – 03 ] | 2026-10-06 → 2026-05-03 A (-156d) | 2026-10-12 → 2026-06-30 A (-104d) | 0% → 100% | 11d → none |
| 1 | **Valves/Chamber** | 2026-11-08 → 2026-04-15 (-207d) | 2026-12-19 → 2026-10-31 (-49d) |  |  |
| CON-LEG101-LR-1040 | Installation of Gate (Sluice) valves (Direct buried) [Local – 03 ] | 2026-12-10 → 2026-04-15 A (-239d) | 2026-12-19 → 2026-08-05 A (-136d) | 0% → 100% | 13d → none |
| CON-LEG101-LR-15110 | Installation of Air Valve chambers [Local – 03 ] | 2026-11-08 → 2026-04-15 A (-207d) | 2026-11-30 → 2026-10-31 (-30d) | 0% → 95% | 13d → 55.1d |
| CON-LEG101-LR-15120 | Installation of Air Valves [Local – 03 ] | 2026-12-01 → 2026-04-15 A (-230d) | 2026-12-09 → 2026-08-05 A (-126d) | 0% → 100% | 13d → none |
| 1 | **Electrical Works** | 2026-10-13 → 2026-04-18 (-178d) | 2026-11-24 → 2027-06-12 (+200d) |  |  |
| 3 | **Low Voltage** | 2026-10-13 → 2026-04-18 (-178d) | 2026-11-24 → 2027-06-12 (+200d) |  |  |
| CON-LEG101-LR-8020 | Installation of Low Voltage Cables Duct Banks [Local – 03 ] | 2026-10-27 → 2026-04-18 A (-192d) | 2026-11-07 → 2026-05-07 A (-184d) | 0% → 100% | 11d → none |
| CON-LEG101-LR-7820 | Excavation works for Low Voltage Cables [Local – 03 ] | 2026-10-13 → 2027-05-08 (+207d) | 2026-10-26 → 2027-05-25 (+211d) |  | 11d → -115.6d |
| CON-LEG101-LR-7920 | Installation of Low Voltage Cables [Local – 03 ] | 2026-11-08 → 2027-05-26 (+199d) | 2026-11-21 → 2027-06-08 (+199d) |  | 11d → -115.6d |
| CON-LEG101-LR-8800 | Installation of Earthing System [Local – 03 ] | 2026-11-22 → 2027-06-09 (+199d) | 2026-11-24 → 2027-06-12 (+200d) |  | 11d → -115.6d |
| 10 | **Telecommunications** | 2026-10-27 → 2026-04-15 (-195d) | 2027-01-28 → 2027-07-15 (+168d) |  |  |
| CON-LEG101-LR-9370 | Installation of Reinforced concrete manhole [Local – 03 ] | 2027-01-05 → 2026-04-15 A (-265d) | 2027-01-28 → 2026-07-02 A (-210d) | 0% → 100% | 11d → none |
| CON-LEG101-LR-8870 | Installation of Sand and soil encased duct banks for primary network [Local – 03 ] | 2026-10-27 → 2026-04-21 A (-189d) | 2026-11-15 → 2027-06-08 (+205d) | 0% → 30% | 19d → -112.5d |
| CON-LEG101-LR-8970 | Installation of Concrete encased duct banks for primary network [Local – 03 ] | 2026-11-25 → 2026-04-22 A (-217d) | 2026-12-01 → 2026-05-10 A (-205d) | 0% → 100% | 11d → none |
| CON-LEG101-LR-9070 | Installation of Sand encased duct banks for secondary network [Local – 03 ] | 2026-12-02 → 2027-06-13 (+193d) | 2026-12-09 → 2027-06-20 (+193d) |  | 11d → -115.6d |
| CON-LEG101-LR-9170 | Installation of Sand and soil encased duct banks, for combined network of primary and secondary [Local – 03 ] | 2026-12-10 → 2027-06-21 (+193d) | 2026-12-29 → 2027-07-10 (+193d) |  | 11d → -115.6d |
| CON-LEG101-LR-9270 | Installation of Concrete encased duct banks for for combined network of primary and secondary [Local – 03 ] | 2026-12-30 → 2027-07-11 (+193d) | 2027-01-04 → 2027-07-15 (+192d) |  | 11d → -115.6d |
| 11 | **CCTV feeding system and GSM** | 2026-12-10 → 2026-05-23 (-201d) | 2027-02-27 → 2027-06-27 (+120d) |  |  |
| CON-LEG101-LR-9900 | Installation of 25 Meters pole for CCTV Cameras [Local – 03 ] | 2027-01-30 → 2026-05-23 A (-252d) | 2027-02-14 → 2026-07-08 A (-221d) | 0% → 100% | 21d → none |
| CON-LEG101-LR-9980 | Installation of Short Range wireless point to point wireless bridge [Local – 03 ] | 2027-02-15 → 2026-05-23 A (-268d) | 2027-02-27 → 2027-06-27 (+120d) | 0% → 90% | 21d → 19.1d |
| CON-LEG101-LR-8590 | Excavation works for Low Voltage Cables for CCTV feeding system and GSM [Local – 03 ] | 2026-12-10 → 2026-07-13 A (-150d) | 2026-12-21 → 2027-06-21 (+182d) | 0% → 90% | 21d → -5.6d |
| CON-LEG101-LR-8660 | Installation of Low Voltage Cables for CCTV feeding system and GSM [Local – 03 ] | 2026-12-22 → 2026-07-13 A (-162d) | 2027-01-04 → 2027-06-23 (+170d) | 0% → 90% | 21d → 19.1d |
| CON-LEG101-LR-9480 | Installation of 8POE ports Industrial Switches for remote poles [Local – 03 ] | 2027-01-05 → 2026-07-13 A (-176d) | 2027-01-13 → 2027-06-23 (+161d) | 0% → 90% | 21d → 19.1d |
| CON-LEG101-LR-9650 | Installation of IP Outdoor CCTV POE Camera,5 MP, Metal Housing [Local – 03 ] | 2027-01-14 → 2026-07-13 A (-185d) | 2027-01-19 → 2027-06-24 (+156d) | 0% → 90% | 21d → 19.1d |
| CON-LEG101-LR-9730 | Installation of Outdoor PTZ IP66 [Local – 03 ] | 2027-01-20 → 2026-07-13 A (-191d) | 2027-01-28 → 2027-06-26 (+149d) | 0% → 90% | 21d → 19.1d |
| 12 | **Earthing System** | 2027-02-28 → 2027-07-26 (+148d) | 2027-03-07 → 2027-08-02 (+148d) |  |  |
| CON-LEG101-LR-15170 | Installation of Earthing for Distribution panels,SL feeder pillars, KWH, Unit substations and RMU [Local – 03 ] | 2027-02-28 → 2027-07-26 (+148d) | 2027-03-07 → 2027-08-02 (+148d) |  | 21d → -5.6d |
| 9 | **Road Lighting** | 2026-12-17 → 2026-04-18 (-243d) | 2027-02-21 → 2027-07-25 (+154d) |  |  |
| CON-LEG101-LR-8120 | Installation of Lighting poles [Local – 03 ] | 2026-12-17 → 2026-04-18 A (-243d) | 2027-01-03 → 2027-06-07 (+155d) | 0% → 30% | 19d → -87.5d |
| CON-LEG101-LR-7440 | Installation of Unit Substation Including concrete foundations and fencing [Local – 03 ] | 2027-01-12 → 2026-07-11 A (-185d) | 2027-01-23 → 2027-06-30 (+158d) | 0% → 20% | 25d → -5.6d |
| CON-LEG101-LR-8220 | Installation of Street Lighting Luminaire [Local – 03 ] | 2027-01-04 → 2027-06-07 (+154d) | 2027-01-11 → 2027-06-15 (+155d) |  | 25d → -0.1d |
| CON-LEG101-LR-7520 | Installation of Ring Main Unit RMU [Local – 03 ] | 2027-01-24 → 2027-07-01 (+158d) | 2027-02-14 → 2027-07-18 (+154d) |  | 25d → -5.6d |
| CON-LEG101-LR-8370 | Installation of Earthing for Streetlighting feeders for every end pole circuits. [Local – 03 ] | 2027-02-15 → 2027-07-19 (+154d) | 2027-02-21 → 2027-07-25 (+154d) |  | 25d → -5.6d |
| 4 | **Local – 04** | 2026-08-20 → 2026-02-01 (-200d) | 2027-03-18 → 2027-09-18 (+184d) |  |  |
| 5 | **TSE Network** | 2026-08-20 → 2026-02-01 (-200d) | 2027-02-25 → 2027-04-13 (+47d) |  |  |
| 2 | **Pipe Work** | 2026-08-20 → 2026-02-01 (-200d) | 2026-10-29 → 2027-01-03 (+66d) |  |  |
| CON-LEG101-LR-1350 | Excavation for TSE Network [Local – 04 ] | 2026-08-20 → 2026-02-01 A (-200d) | 2026-09-02 → 2026-12-03 (+92d) | 0% → 90% | 13d → -42.24d |
| CON-LEG101-LR-1470 | Granular bedding for TSE Network [Local – 04 ] | 2026-09-03 → 2026-02-15 A (-200d) | 2026-09-09 → 2026-12-05 (+87d) | 0% → 80% | 13d → -42.24d |
| CON-LEG101-LR-1580 | Installation of Pipe for TSE Network [Local – 04 ] | 2026-09-10 → 2026-02-17 A (-205d) | 2026-09-24 → 2026-12-12 (+79d) | 0% → 52% | 13d → -42.24d |
| CON-LEG101-LR-1910 | Granular Surround for TSE Network [Local – 04 ] | 2026-10-06 → 2026-02-18 A (-230d) | 2026-10-12 → 2026-12-26 (+75d) | 0% → 52% | 13d → -42.24d |
| CON-LEG101-LR-2020 | Installation of Micron Marker Magnetic Tape [Local – 04 ] | 2026-10-13 → 2026-03-11 A (-216d) | 2026-10-15 → 2026-12-27 (+73d) | 0% → 52% | 13d → -42.24d |
| CON-LEG101-LR-2130 | Backfilling to Subgrade Elevation [Local – 04 ] | 2026-10-17 → 2026-03-14 A (-217d) | 2026-10-29 → 2027-01-03 (+66d) | 0% → 52% | 13d → -42.24d |
| CON-LEG101-LR-1690 | Testing for TSE Network [Local – 04 ] | 2026-09-26 → 2026-12-12 (+77d) | 2026-10-01 → 2026-12-19 (+79d) |  | 13d → -42.24d |
| CON-LEG101-LR-1810 | Concrete encasement, pipe dia 110 mm [Local – 04 ] | 2026-10-03 → 2026-12-19 (+77d) | 2026-10-05 → 2026-12-22 (+78d) |  | 13d → -42.24d |
| 1 | **Valves/Chamber** | 2026-10-17 → 2026-12-27 (+71d) | 2027-02-25 → 2027-04-13 (+47d) |  |  |
| CON-LEG101-LR-2730 | Installation of Air Valve chambers [Local – 04 ] | 2026-10-17 → 2026-12-27 (+71d) | 2026-11-09 → 2027-01-20 (+72d) |  | 16d → -26.48d |
| CON-LEG101-LR-15060 | Installation of Wash-out Valve chambers [Local – 04 ] | 2026-11-10 → 2027-01-20 (+71d) | 2026-12-03 → 2027-02-18 (+77d) |  | 16d → -26.48d |
| CON-LEG101-LR-2240 | Installation of Gate (Sluice) valves (Direct buried) [Local – 04 ] | 2026-12-20 → 2027-01-20 (+31d) | 2026-12-29 → 2027-01-31 (+33d) |  | 13d → -14.48d |
| CON-LEG101-LR-2350 | Installation of Wash-out Valves [Local – 04 ] | 2026-12-30 → 2027-02-18 (+50d) | 2027-01-16 → 2027-03-09 (+52d) |  | 13d → -26.48d |
| CON-LEG101-LR-2430 | Installation of Air Valves [Local – 04 ] | 2027-01-17 → 2027-03-09 (+51d) | 2027-02-02 → 2027-03-27 (+53d) |  | 13d → -26.48d |
| CON-LEG101-LR-2510 | Installation of Fire Hydrant [Local – 04 ] | 2027-02-03 → 2027-03-27 (+52d) | 2027-02-25 → 2027-04-13 (+47d) |  | 13d → -26.48d |
| 6 | **Public Water Utility Distribution** | 2026-09-03 → 2026-02-01 (-214d) | 2027-01-10 → 2027-03-29 (+78d) |  |  |

| ID | Task | Start | Finish | Complete | Total float |
| --- | --- | --- | --- | --- | --- |
| 2 | **Pipe Work** | 2026-09-03 → 2026-02-01 (-214d) | 2026-10-26 → 2027-01-03 (+69d) |  |  |
| CON-LEG101-LR-10090 | Excavation for Public Water Utility Distribution Piping [Local – 04 ] | 2026-09-03 → 2026-02-01 A (-214d) | 2026-09-14 → 2026-12-05 (+82d) | 0% → 90% | 16d → -42.2d |
| CON-LEG101-LR-10190 | Granular bedding for Public Water Utility Distribution Piping [Local – 04 ] | 2026-09-15 → 2026-02-15 A (-212d) | 2026-09-20 → 2026-12-06 (+77d) | 0% → 80% | 16d → -42.2d |
| CON-LEG101-LR-10290 | Installation of Pipe for Public Water Utility Distribution Piping [Local – 04 ] | 2026-09-21 → 2026-02-17 A (-216d) | 2026-10-03 → 2026-12-13 (+71d) | 0% → 40% | 16d → -42.2d |
| CON-LEG101-LR-10590 | Granular Surround for Public Water Utility Distribution Piping [Local – 04 ] | 2026-10-13 → 2026-02-18 A (-237d) | 2026-10-18 → 2026-12-26 (+69d) | 0% → 40% | 16d → -42.2d |
| CON-LEG101-LR-10390 | Testing for Public Water Utility Distribution Piping [Local – 04 ] | 2026-10-04 → 2026-12-13 (+70d) | 2026-10-08 → 2026-12-19 (+72d) |  | 16d → -42.2d |
| CON-LEG101-LR-10490 | Concrete encasement, pipe dia 110 mm [Local – 04 ] | 2026-10-10 → 2026-12-19 (+70d) | 2026-10-12 → 2026-12-22 (+71d) |  | 16d → -42.2d |
| CON-LEG101-LR-10690 | Installation of Micron Marker Magnetic Tape [Local – 04 ] | 2026-10-19 → 2026-12-26 (+68d) | 2026-10-21 → 2026-12-29 (+69d) |  | 16d → -42.2d |
| CON-LEG101-LR-10790 | Backfilling to Subgrade Elevation [Local – 04 ] | 2026-10-22 → 2026-12-29 (+68d) | 2026-10-26 → 2027-01-03 (+69d) |  | 16d → -42.2d |
| 1 | **Valves/Chamber** | 2026-12-05 → 2027-02-18 (+75d) | 2027-01-10 → 2027-03-29 (+78d) |  |  |
| CON-LEG101-LR-1280 | Installation of Air Valve chambers [Local – 04 ] | 2026-12-05 → 2027-02-18 (+75d) | 2026-12-27 → 2027-03-15 (+78d) |  | 16d → 72.52d |
| CON-LEG101-LR-1050 | Installation of Gate (Sluice) valves (Direct buried) [Local – 04 ] | 2026-12-28 → 2027-03-15 (+77d) | 2027-01-03 → 2027-03-22 (+78d) |  | 16d → 72.52d |
| CON-LEG101-LR-1180 | Installation of Air Valves [Local – 04 ] | 2027-01-04 → 2027-03-22 (+77d) | 2027-01-10 → 2027-03-29 (+78d) |  | 16d → 72.52d |
| 8 | **Electrical Works** | 2026-10-31 → 2027-05-09 (+190d) | 2026-12-14 → 2027-06-27 (+195d) |  |  |
| 3 | **Low Voltage** | 2026-10-31 → 2027-05-09 (+190d) | 2026-12-14 → 2027-06-27 (+195d) |  |  |
| CON-LEG101-LR-7830 | Excavation works for Low Voltage Cables [Local – 04 ] | 2026-10-31 → 2027-05-09 (+190d) | 2026-11-14 → 2027-05-27 (+194d) |  | 13d → -145d |
| CON-LEG101-LR-8030 | Installation of Low Voltage Cables Duct Banks [Local – 04 ] | 2026-11-15 → 2027-05-29 (+195d) | 2026-11-25 → 2027-06-08 (+195d) |  | 13d → -145d |
| CON-LEG101-LR-7930 | Installation of Low Voltage Cables [Local – 04 ] | 2026-11-26 → 2027-06-09 (+195d) | 2026-12-10 → 2027-06-23 (+195d) |  | 25d → -84d |
| CON-LEG101-LR-8810 | Installation of Earthing System [Local – 04 ] | 2026-12-12 → 2027-06-24 (+194d) | 2026-12-14 → 2027-06-27 (+195d) |  | 25d → -36.6d |
| 10 | **Telecommunications** | 2026-11-26 → 2027-06-09 (+195d) | 2027-02-25 → 2027-09-02 (+189d) |  |  |
| CON-LEG101-LR-8880 | Installation of Sand and soil encased duct banks for primary network [Local – 04 ] | 2026-11-26 → 2027-06-09 (+195d) | 2026-12-15 → 2027-06-28 (+195d) |  | 13d → -145d |
| CON-LEG101-LR-8980 | Installation of Concrete encased duct banks for primary network [Local – 04 ] | 2026-12-16 → 2027-06-29 (+195d) | 2026-12-22 → 2027-07-05 (+195d) |  | 13d → -145d |
| CON-LEG101-LR-9080 | Installation of Sand encased duct banks for secondary network [Local – 04 ] | 2026-12-23 → 2027-07-06 (+195d) | 2026-12-30 → 2027-07-13 (+195d) |  | 13d → -145d |
| CON-LEG101-LR-9180 | Installation of Sand and soil encased duct banks, for combined network of primary and secondary [Local – 04 ] | 2026-12-31 → 2027-07-14 (+195d) | 2027-01-20 → 2027-08-03 (+195d) |  | 13d → -145d |
| CON-LEG101-LR-9280 | Installation of Concrete encased duct banks for for combined network of primary and secondary [Local – 04 ] | 2027-01-21 → 2027-08-04 (+195d) | 2027-01-26 → 2027-08-09 (+195d) |  | 13d → -145d |
| CON-LEG101-LR-9380 | Installation of Reinforced concrete manhole [Local – 04 ] | 2027-01-27 → 2027-08-10 (+195d) | 2027-02-25 → 2027-09-02 (+189d) |  | 13d → -145d |
| 11 | **CCTV feeding system and GSM** | 2026-12-16 → 2027-06-29 (+195d) | 2027-03-03 → 2027-09-08 (+189d) |  |  |
| CON-LEG101-LR-8600 | Excavation works for Low Voltage Cables for CCTV feeding system and GSM [Local – 04 ] | 2026-12-16 → 2027-06-29 (+195d) | 2026-12-29 → 2027-07-12 (+195d) |  | 24d → -37.6d |
| CON-LEG101-LR-8670 | Installation of Low Voltage Cables for CCTV feeding system and GSM [Local – 04 ] | 2026-12-30 → 2027-07-13 (+195d) | 2027-01-13 → 2027-07-27 (+195d) |  | 24d → -37.6d |
| CON-LEG101-LR-9490 | Installation of 8POE ports Industrial Switches for remote poles [Local – 04 ] | 2027-01-14 → 2027-07-28 (+195d) | 2027-01-21 → 2027-08-04 (+195d) |  | 24d → -37.6d |
| CON-LEG101-LR-9660 | Installation of IP Outdoor CCTV POE Camera,5 MP, Metal Housing [Local – 04 ] | 2027-01-23 → 2027-08-05 (+194d) | 2027-01-31 → 2027-08-14 (+195d) |  | 24d → -37.6d |
| CON-LEG101-LR-9740 | Installation of Outdoor PTZ IP66 [Local – 04 ] | 2027-02-01 → 2027-08-15 (+195d) | 2027-02-16 → 2027-08-25 (+190d) |  | 24d → -37.6d |
| CON-LEG101-LR-9990 | Installation of Short Range wireless point to point wireless bridge [Local – 04 ] | 2027-02-17 → 2027-08-26 (+190d) | 2027-03-03 → 2027-09-08 (+189d) |  | 24d → -37.6d |
| 12 | **Earthing System** | 2027-03-10 → 2027-09-09 (+183d) | 2027-03-18 → 2027-09-18 (+184d) |  |  |
| CON-LEG101-LR-15160 | Installation of Earthing for Distribution panels,SL feeder pillars, KWH, Unit substations and RMU [Local – 04 ] | 2027-03-10 → 2027-09-09 (+183d) | 2027-03-18 → 2027-09-18 (+184d) |  | 19d → -37.6d |
| 9 | **Road Lighting** | 2027-01-04 → 2027-06-07 (+154d) | 2027-03-09 → 2027-08-12 (+156d) |  |  |
| CON-LEG101-LR-8130 | Installation of Lighting poles [Local – 04 ] | 2027-01-04 → 2027-06-07 (+154d) | 2027-01-24 → 2027-06-28 (+155d) |  | 19d → -87.5d |
| CON-LEG101-LR-8230 | Installation of Street Lighting Luminaire [Local – 04 ] | 2027-01-25 → 2027-06-28 (+154d) | 2027-01-31 → 2027-07-05 (+155d) |  | 19d → -8.1d |
| CON-LEG101-LR-7450 | Installation of Unit Substation Including concrete foundations and fencing [Local – 04 ] | 2027-02-01 → 2027-07-13 (+162d) | 2027-02-08 → 2027-07-20 (+162d) |  | 19d → -14.6d |
| CON-LEG101-LR-7530 | Installation of Ring Main Unit RMU [Local – 04 ] | 2027-02-14 → 2027-07-21 (+157d) | 2027-03-02 → 2027-08-05 (+156d) |  | 19d → -14.6d |
| CON-LEG101-LR-8380 | Installation of Earthing for Streetlighting feeders for every end pole circuits. [Local – 04 ] | 2027-03-03 → 2027-08-07 (+157d) | 2027-03-09 → 2027-08-12 (+156d) |  | 19d → -14.6d |
| 5 | **Local – 05** | 2026-08-30 → 2026-03-15 (-168d) | 2027-03-18 → 2027-07-15 (+119d) |  |  |
| 5 | **TSE Network** | 2026-08-30 → 2026-03-24 (-159d) | 2027-03-18 → 2026-11-14 (-124d) |  |  |
| 2 | **Pipe Work** | 2026-08-30 → 2026-03-24 (-159d) | 2026-11-29 → 2026-06-23 (-159d) |  |  |
| CON-LEG101-LR-1370 | Excavation for TSE Network [Local – 05 ] | 2026-08-30 → 2026-03-24 A (-159d) | 2026-09-12 → 2026-04-16 A (-149d) | 0% → 100% | 28d → none |
| CON-LEG101-LR-1480 | Granular bedding for TSE Network [Local – 05 ] | 2026-09-13 → 2026-03-30 A (-167d) | 2026-09-22 → 2026-04-18 A (-157d) | 0% → 100% | 28d → none |
| CON-LEG101-LR-1590 | Installation of Pipe for TSE Network [Local – 05 ] | 2026-09-24 → 2026-04-01 A (-176d) | 2026-10-11 → 2026-04-20 A (-174d) | 0% → 100% | 28d → none |
| CON-LEG101-LR-1700 | Testing for TSE Network [Local – 05 ] | 2026-10-12 → 2026-04-27 A (-168d) | 2026-10-21 → 2026-04-28 A (-176d) | 0% → 100% | 28d → none |
| CON-LEG101-LR-1820 | Concrete encasement, pipe dia 110 mm [Local – 05 ] | 2026-10-22 → 2026-04-29 A (-176d) | 2026-10-24 → 2026-06-20 A (-126d) | 0% → 100% | 28d → none |
| CON-LEG101-LR-1920 | Granular Surround for TSE Network [Local – 05 ] | 2026-10-25 → 2026-04-30 A (-178d) | 2026-11-03 → 2026-06-21 A (-135d) | 0% → 100% | 28d → none |
| CON-LEG101-LR-2030 | Installation of Micron Marker Magnetic Tape [Local – 05 ] | 2026-11-04 → 2026-05-02 A (-186d) | 2026-11-08 → 2026-06-22 A (-139d) | 0% → 100% | 28d → none |
| CON-LEG101-LR-2140 | Backfilling to Subgrade Elevation [Local – 05 ] | 2026-11-09 → 2026-05-03 A (-190d) | 2026-11-29 → 2026-06-23 A (-159d) | 0% → 100% | 28d → none |
| 1 | **Valves/Chamber** | 2026-10-12 → 2026-04-04 (-191d) | 2027-03-18 → 2026-11-14 (-124d) |  |  |
| CON-LEG101-LR-2740 | Installation of Air Valve chambers [Local – 05 ] | 2026-11-05 → 2026-04-04 A (-215d) | 2026-11-29 → 2026-11-14 (-15d) | 0% → 97% | 28d → 183.84d |
| CON-LEG101-LR-2250 | Installation of Gate (Sluice) valves (Direct buried) [Local – 05 ] | 2027-01-11 → 2026-04-25 A (-261d) | 2027-01-26 → 2026-08-08 A (-171d) | 0% → 100% | 16d → none |
| CON-LEG101-LR-2360 | Installation of Wash-out Valves [Local – 05 ] | 2027-01-27 → 2026-04-25 A (-277d) | 2027-02-16 → 2026-08-08 A (-192d) | 0% → 100% | 16d → none |
| CON-LEG101-LR-2440 | Installation of Air Valves [Local – 05 ] | 2027-02-17 → 2026-04-25 A (-298d) | 2027-03-06 → 2026-08-08 A (-210d) | 0% → 100% | 16d → none |
| CON-LEG101-LR-2520 | Installation of Fire Hydrant [Local – 05 ] | 2027-03-07 → 2026-04-25 A (-316d) | 2027-03-18 → 2026-09-30 A (-169d) | 0% → 100% | 16d → none |
| CON-LEG101-LR-2660 | Installation of Wash out chambers [Local – 05 ] | 2026-10-12 → 2026-04-30 A (-165d) | 2026-11-04 → 2026-11-12 (+8d) | 0% → 97% | 28d → 183.84d |
| 6 | **Public Water Utility Distribution** | 2026-11-30 → 2026-03-24 (-251d) | 2027-03-04 → 2026-11-15 (-109d) |  |  |
| 2 | **Pipe Work** | 2026-11-30 → 2026-03-24 (-251d) | 2027-03-04 → 2026-05-03 (-305d) |  |  |
| CON-LEG101-LR-10100 | Excavation for Public Water Utility Distribution Piping [Local – 05 ] | 2026-11-30 → 2026-03-24 A (-251d) | 2026-12-14 → 2026-04-21 A (-237d) | 0% → 100% | 28d → none |
| CON-LEG101-LR-10200 | Granular bedding for Public Water Utility Distribution Piping [Local – 05 ] | 2026-12-15 → 2026-03-30 A (-260d) | 2026-12-26 → 2026-04-22 A (-248d) | 0% → 100% | 28d → none |
| CON-LEG101-LR-10300 | Installation of Pipe for Public Water Utility Distribution Piping [Local – 05 ] | 2026-12-27 → 2026-04-01 A (-270d) | 2027-01-11 → 2026-04-23 A (-263d) | 0% → 100% | 28d → none |
| CON-LEG101-LR-10400 | Testing for Public Water Utility Distribution Piping [Local – 05 ] | 2027-01-12 → 2026-04-27 A (-260d) | 2027-01-23 → 2026-04-28 A (-270d) | 0% → 100% | 28d → none |
| CON-LEG101-LR-10500 | Concrete encasement, pipe dia 110 mm [Local – 05 ] | 2027-01-24 → 2026-04-29 A (-270d) | 2027-01-31 → 2026-04-29 A (-277d) | 0% → 100% | 28d → none |
| CON-LEG101-LR-10600 | Granular Surround for Public Water Utility Distribution Piping [Local – 05 ] | 2027-02-01 → 2026-04-30 A (-277d) | 2027-02-16 → 2026-04-30 A (-292d) | 0% → 100% | 28d → none |
| CON-LEG101-LR-10700 | Installation of Micron Marker Magnetic Tape [Local – 05 ] | 2027-02-17 → 2026-05-02 A (-291d) | 2027-02-20 → 2026-05-02 A (-294d) | 0% → 100% | 28d → none |
| CON-LEG101-LR-10800 | Backfilling to Subgrade Elevation [Local – 05 ] | 2027-02-21 → 2026-05-03 A (-294d) | 2027-03-04 → 2026-05-03 A (-305d) | 0% → 100% | 28d → none |
| 1 | **Valves/Chamber** | 2027-01-12 → 2026-04-25 (-262d) | 2027-03-04 → 2026-11-15 (-109d) |  |  |

| ID | Task | Start | Finish | Complete | Total float |
| --- | --- | --- | --- | --- | --- |
| CON-LEG101-LR-1060 | Installation of Gate (Sluice) valves (Direct buried) [Local – 05 ] | 2027-02-04 → 2026-04-25 A (-285d) | 2027-02-20 → 2026-08-08 A (-196d) | 0% → 100% | 31d → none |
| CON-LEG101-LR-1140 | Installation of Wash-out Valves [Local – 05 ] | 2027-02-21 → 2026-04-25 A (-302d) | 2027-03-04 → 2026-08-08 A (-208d) | 0% → 100% | 31d → none |
| CON-LEG101-LR-1240 | Installation of Wash out chambers [Local – 05 ] | 2027-01-12 → 2026-04-30 A (-257d) | 2027-02-03 → 2026-11-15 (-80d) | 0% → 95% | 31d → 217.24d |
| 1 | **Electrical Works** | 2026-11-30 → 2026-05-02 (-212d) | 2027-01-18 → 2027-05-19 (+121d) |  |  |
| 3 | **Low Voltage** | 2026-11-30 → 2026-05-02 (-212d) | 2027-01-18 → 2027-05-19 (+121d) |  |  |
| CON-LEG101-LR-8040 | Installation of Low Voltage Cables Duct Banks [Local – 05 ] | 2026-12-24 → 2026-05-02 A (-236d) | 2026-12-30 → 2026-05-07 A (-237d) | 0% → 100% | 32d → none |
| CON-LEG101-LR-7840 | Excavation works for Low Voltage Cables [Local – 05 ] | 2026-11-30 → 2026-07-30 A (-123d) | 2026-12-23 → 2026-08-17 A (-128d) | 0% → 100% | 32d → none |
| CON-LEG101-LR-7940 | Installation of Low Voltage Cables [Local – 05 ] | 2026-12-31 → 2026-08-02 A (-151d) | 2027-01-16 → 2026-08-17 A (-152d) | 0% → 100% | 32d → none |
| CON-LEG101-LR-8820 | Installation of Earthing System [Local – 05 ] | 2027-01-17 → 2027-05-13 (+116d) | 2027-01-18 → 2027-05-19 (+121d) |  | 32d → 31d |
| 10 | **Telecommunications** | 2026-11-30 → 2026-05-02 (-212d) | 2027-01-30 → 2027-05-31 (+121d) |  |  |
| CON-LEG101-LR-8890 | Installation of Sand and soil encased duct banks for primary network [Local – 05 ] | 2026-11-30 → 2026-05-02 A (-212d) | 2026-12-10 → 2026-07-04 A (-159d) | 0% → 100% | 32d → none |
| CON-LEG101-LR-8990 | Installation of Concrete encased duct banks for primary network [Local – 05 ] | 2026-12-12 → 2026-05-02 A (-224d) | 2026-12-20 → 2026-05-07 A (-227d) | 0% → 100% | 32d → none |
| CON-LEG101-LR-9290 | Installation of Concrete encased duct banks for for combined network of primary and secondary [Local – 05 ] | 2027-01-11 → 2026-05-02 A (-254d) | 2027-01-18 → 2026-05-20 A (-243d) | 0% → 100% | 32d → none |
| CON-LEG101-LR-9390 | Installation of Reinforced concrete manhole [Local – 05 ] | 2027-01-19 → 2026-05-02 A (-262d) | 2027-01-30 → 2027-05-31 (+121d) | 0% → 90% | 32d → 22.2d |
| CON-LEG101-LR-9090 | Installation of Sand encased duct banks for secondary network [Local – 05 ] | 2026-12-21 → 2026-09-05 A (-107d) | 2026-12-29 → 2027-05-23 (+145d) | 0% → 40% | 32d → 22.2d |
| CON-LEG101-LR-9190 | Installation of Sand and soil encased duct banks, for combined network of primary and secondary [Local – 05 ] | 2026-12-30 → 2026-09-05 A (-116d) | 2027-01-10 → 2027-05-30 (+140d) | 0% → 40% | 32d → 22.2d |
| 11 | **CCTV feeding system and GSM** | 2026-12-12 → 2026-05-25 (-201d) | 2027-03-10 → 2027-06-07 (+89d) |  |  |
| CON-LEG101-LR-9910 | Installation of 25 Meters pole for CCTV Cameras [Local – 05 ] | 2027-03-04 → 2026-05-25 A (-283d) | 2027-03-08 → 2026-07-08 A (-243d) | 0% → 100% | 24d → none |
| CON-LEG101-LR-10000 | Installation of Short Range wireless point to point wireless bridge [Local – 05 ] | 2027-03-09 → 2026-07-15 A (-237d) | 2027-03-10 → 2027-06-07 (+89d) | 0% → 90% | 24d → 48.4d |
| CON-LEG101-LR-8610 | Excavation works for Low Voltage Cables for CCTV feeding system and GSM [Local – 05 ] | 2026-12-12 → 2026-07-15 A (-150d) | 2026-12-15 → 2027-05-13 (+149d) | 0% → 80% | 43d → 52.7d |
| CON-LEG101-LR-8680 | Installation of Low Voltage Cables for CCTV feeding system and GSM [Local – 05 ] | 2026-12-16 → 2026-07-15 A (-154d) | 2026-12-22 → 2027-05-19 (+148d) | 0% → 90% | 43d → 56.6d |
| CON-LEG101-LR-9440 | Installation of Fiber Optic Patch Panel 12 port [Local – 05 ] | 2026-12-23 → 2026-07-15 A (-161d) | 2026-12-27 → 2027-05-19 (+143d) | 0% → 90% | 43d → 56.6d |
| CON-LEG101-LR-9500 | Installation of 8POE ports Industrial Switches for remote poles [Local – 05 ] | 2026-12-28 → 2026-07-15 A (-166d) | 2026-12-30 → 2027-05-20 (+141d) | 0% → 90% | 43d → 56.6d |
| CON-LEG101-LR-9530 | Installation of Core Switch [Local – 05 ] | 2027-01-17 → 2026-07-15 A (-186d) | 2027-01-25 → 2027-05-20 (+115d) | 0% → 90% | 29d → 56.6d |
| CON-LEG101-LR-9550 | Installation of Access Switch 48 port [Local – 05 ] | 2027-01-26 → 2026-07-15 A (-195d) | 2027-01-30 → 2027-05-22 (+112d) | 0% → 90% | 29d → 56.6d |
| CON-LEG101-LR-9580 | Installation of Server [Local – 05 ] | 2027-01-31 → 2026-07-15 A (-200d) | 2027-02-02 → 2027-05-22 (+109d) | 0% → 90% | 29d → 56.6d |
| CON-LEG101-LR-9670 | Installation of IP Outdoor CCTV POE Camera,5 MP, Metal Housing [Local – 05 ] | 2027-02-07 → 2026-07-15 A (-207d) | 2027-02-15 → 2027-06-05 (+110d) | 0% → 90% | 29d → 48.4d |
| CON-LEG101-LR-9750 | Installation of Outdoor PTZ IP66 [Local – 05 ] | 2027-02-16 → 2026-07-15 A (-216d) | 2027-02-18 → 2027-06-05 (+107d) | 0% → 90% | 29d → 48.4d |
| CON-LEG101-LR-9860 | Installation of Horizontal Power Distribution Unit (min 8 outlets) [Local – 05 ] | 2027-03-01 → 2026-07-15 A (-229d) | 2027-03-03 → 2027-06-07 (+96d) | 0% → 90% | 24d → 48.4d |
| CON-LEG101-LR-9600 | Installation of Stand rack 42U- 19" [Local – 05 ] | 2027-02-03 → 2027-05-31 (+117d) | 2027-02-06 → 2027-06-03 (+117d) |  | 29d → 48.4d |
| CON-LEG101-LR-9810 | Installation of LED Screen 43" (24/7 operation) with Ethernet decoders [Local – 05 ] | 2027-02-20 → 2027-06-05 (+105d) | 2027-02-21 → 2027-06-07 (+106d) |  | 29d → 48.4d |
| 12 | **Earthing System** | 2027-03-11 → 2027-07-12 (+123d) | 2027-03-13 → 2027-07-14 (+123d) |  |  |
| CON-LEG101-LR-15150 | Installation of Earthing for Distribution panels,SL feeder pillars, KWH, Unit substations and RMU [Local – 05 ] | 2027-03-11 → 2027-07-12 (+123d) | 2027-03-13 → 2027-07-14 (+123d) |  | 24d → 19d |
| 9 | **Road Lighting** | 2027-01-25 → 2026-03-15 (-316d) | 2027-03-16 → 2027-07-15 (+121d) |  |  |
| CON-LEG101-LR-8140 | Installation of Lighting poles [Local – 05 ] | 2027-01-25 → 2026-03-15 A (-316d) | 2027-02-21 → 2026-08-17 A (-188d) | 0% → 100% | 19d → none |
| CON-LEG101-LR-7460 | Installation of Unit Substation Including concrete foundations and fencing [Local – 05 ] | 2027-02-23 → 2026-07-15 A (-223d) | 2027-03-02 → 2027-07-04 (+124d) | 0% → 30% | 21d → 18d |
| CON-LEG101-LR-8240 | Installation of Street Lighting Luminaire [Local – 05 ] | 2027-02-23 → 2026-08-01 A (-206d) | 2027-02-28 → 2026-08-17 A (-195d) | 0% → 100% | 30d → none |
| CON-LEG101-LR-8390 | Installation of Earthing for Streetlighting feeders for every end pole circuits. [Local – 05 ] | 2027-03-11 → 2026-08-10 A (-213d) | 2027-03-16 → 2027-07-15 (+121d) | 0% → 40% | 21d → 18d |
| CON-LEG101-LR-7540 | Installation of Ring Main Unit RMU [Local – 05 ] | 2027-03-03 → 2027-07-04 (+123d) | 2027-03-10 → 2027-07-12 (+124d) |  | 21d → 18d |
| 6 | **Local – 06** | 2026-08-31 → 2026-03-16 (-168d) | 2027-03-18 → 2027-07-10 (+114d) |  |  |
| 5 | **TSE Network** | 2026-08-31 → 2026-04-01 (-152d) | 2026-12-07 → 2026-09-03 (-95d) |  |  |
| 2 | **Pipe Work** | 2026-08-31 → 2026-04-01 (-152d) | 2026-11-09 → 2026-06-23 (-139d) |  |  |
| CON-LEG101-LR-1380 | Excavation for TSE Network [Local – 06 ] | 2026-08-31 → 2026-04-01 A (-152d) | 2026-09-10 → 2026-04-12 A (-151d) | 0% → 100% | 19d → none |
| CON-LEG101-LR-1490 | Granular bedding for TSE Network [Local – 06 ] | 2026-09-12 → 2026-04-13 A (-152d) | 2026-09-19 → 2026-05-21 A (-121d) | 0% → 100% | 19d → none |
| CON-LEG101-LR-1600 | Installation of Pipe for TSE Network [Local – 06 ] | 2026-09-20 → 2026-04-15 A (-158d) | 2026-10-01 → 2026-05-24 A (-130d) | 0% → 100% | 19d → none |
| CON-LEG101-LR-1710 | Testing for TSE Network [Local – 06 ] | 2026-10-03 → 2026-06-13 A (-112d) | 2026-10-10 → 2026-06-14 A (-118d) | 0% → 100% | 19d → none |
| CON-LEG101-LR-1830 | Concrete encasement, pipe dia 110 mm [Local – 06 ] | 2026-10-11 → 2026-06-15 A (-118d) | 2026-10-12 → 2026-06-17 A (-117d) | 0% → 100% | 19d → none |
| CON-LEG101-LR-1930 | Granular Surround for TSE Network [Local – 06 ] | 2026-10-13 → 2026-06-16 A (-119d) | 2026-10-20 → 2026-06-17 A (-125d) | 0% → 100% | 19d → none |
| CON-LEG101-LR-2040 | Installation of Micron Marker Magnetic Tape [Local – 06 ] | 2026-10-21 → 2026-06-18 A (-125d) | 2026-10-24 → 2026-06-18 A (-128d) | 0% → 100% | 19d → none |
| CON-LEG101-LR-2150 | Backfilling to Subgrade Elevation [Local – 06 ] | 2026-10-25 → 2026-06-20 A (-127d) | 2026-11-09 → 2026-06-23 A (-139d) | 0% → 100% | 19d → none |
| 1 | **Valves/Chamber** | 2026-11-10 → 2026-05-13 (-181d) | 2026-12-07 → 2026-09-03 (-95d) |  |  |
| CON-LEG101-LR-2260 | Installation of Gate (Sluice) valves (Direct buried) [Local – 06 ] | 2026-11-10 → 2026-05-13 A (-181d) | 2026-11-19 → 2026-08-06 A (-105d) | 0% → 100% | 26d → none |
| CON-LEG101-LR-2530 | Installation of Fire Hydrant [Local – 06 ] | 2026-11-21 → 2026-06-10 A (-164d) | 2026-12-07 → 2026-09-03 A (-95d) | 0% → 100% | 26d → none |
| 6 | **Public Water Utility Distribution** | 2026-11-10 → 2026-04-01 (-223d) | 2027-01-18 → 2026-05-19 (-244d) |  |  |
| 2 | **Pipe Work** | 2026-11-10 → 2026-04-01 (-223d) | 2027-01-18 → 2026-05-19 (-244d) |  |  |
| CON-LEG101-LR-10110 | Excavation for Public Water Utility Distribution Piping [Local – 06 ] | 2026-11-10 → 2026-04-01 A (-223d) | 2026-11-22 → 2026-04-12 A (-224d) | 0% → 100% | 19d → none |
| CON-LEG101-LR-10210 | Granular bedding for Public Water Utility Distribution Piping [Local – 06 ] | 2026-11-23 → 2026-04-13 A (-224d) | 2026-12-01 → 2026-05-09 A (-206d) | 0% → 100% | 19d → none |
| CON-LEG101-LR-10310 | Installation of Pipe for Public Water Utility Distribution Piping [Local – 06 ] | 2026-12-02 → 2026-04-15 A (-231d) | 2026-12-15 → 2026-05-10 A (-219d) | 0% → 100% | 19d → none |
| CON-LEG101-LR-10410 | Testing for Public Water Utility Distribution Piping [Local – 06 ] | 2026-12-16 → 2026-05-11 A (-219d) | 2026-12-24 → 2026-05-12 A (-226d) | 0% → 100% | 19d → none |
| CON-LEG101-LR-10510 | Concrete encasement, pipe dia 110 mm [Local – 06 ] | 2026-12-26 → 2026-05-13 A (-227d) | 2026-12-28 → 2026-05-14 A (-228d) | 0% → 100% | 19d → none |
| CON-LEG101-LR-10610 | Granular Surround for Public Water Utility Distribution Piping [Local – 06 ] | 2026-12-29 → 2026-05-13 A (-230d) | 2027-01-06 → 2026-05-14 A (-237d) | 0% → 100% | 19d → none |
| CON-LEG101-LR-10710 | Installation of Micron Marker Magnetic Tape [Local – 06 ] | 2027-01-07 → 2026-05-16 A (-236d) | 2027-01-10 → 2026-05-16 A (-239d) | 0% → 100% | 19d → none |
| CON-LEG101-LR-10810 | Backfilling to Subgrade Elevation [Local – 06 ] | 2027-01-11 → 2026-05-17 A (-239d) | 2027-01-18 → 2026-05-19 A (-244d) | 0% → 100% | 19d → none |
| 1 | **Valves/Chamber** | 2027-01-11 → 2026-05-09 (-247d) | 2027-01-13 → 2026-05-10 (-248d) |  |  |
| CON-LEG101-LR-1070 | Installation of Gate (Sluice) valves (Direct buried) [Local – 06 ] | 2027-01-11 → 2026-05-09 A (-247d) | 2027-01-13 → 2026-05-10 A (-248d) | 0% → 100% | 24d → none |
| 1 | **Electrical Works** | 2027-01-19 → 2026-06-13 (-220d) | 2027-02-06 → 2026-08-02 (-188d) |  |  |
| 3 | **Low Voltage** | 2027-01-19 → 2026-06-13 (-220d) | 2027-02-06 → 2026-08-02 (-188d) |  |  |
| CON-LEG101-LR-8050 | Installation of Low Voltage Cables Duct Banks [Local – 06 ] | 2027-01-26 → 2026-06-13 A (-227d) | 2027-01-30 → 2026-06-17 A (-227d) | 0% → 100% | 20d → none |
| CON-LEG101-LR-7850 | Excavation works for Low Voltage Cables [Local – 06 ] | 2027-01-19 → 2026-07-23 A (-180d) | 2027-01-25 → 2026-07-30 A (-179d) | 0% → 100% | 20d → none |
| CON-LEG101-LR-7950 | Installation of Low Voltage Cables [Local – 06 ] | 2027-01-31 → 2026-07-25 A (-190d) | 2027-02-06 → 2026-08-02 A (-188d) | 0% → 100% | 20d → none |

| ID | Task | Start | Finish | Complete | Total float |
| --- | --- | --- | --- | --- | --- |
| 10 | **Telecommunications** | 2027-02-07 → 2026-05-13 (-270d) | 2027-03-17 → 2027-05-19 (+63d) |  |  |
| CON-LEG101-LR-9400 | Installation of Reinforced concrete manhole [Local – 06 ] | 2027-03-11 → 2026-05-13 A (-302d) | 2027-03-17 → 2026-07-05 A (-255d) | 0% → 100% | 20d → none |
| CON-LEG101-LR-8900 | Installation of Sand and soil encased duct banks for primary network [Local – 06 ] | 2027-02-07 → 2026-06-13 A (-239d) | 2027-02-15 → 2026-07-04 A (-226d) | 0% → 100% | 20d → none |
| CON-LEG101-LR-9000 | Installation of Concrete encased duct banks for primary network [Local – 06 ] | 2027-02-16 → 2026-06-13 A (-248d) | 2027-02-23 → 2026-06-17 A (-251d) | 0% → 100% | 20d → none |
| CON-LEG101-LR-9300 | Installation of Concrete encased duct banks for for combined network of primary and secondary [Local – 06 ] | 2027-03-07 → 2026-06-13 A (-267d) | 2027-03-10 → 2026-06-17 A (-266d) | 0% → 100% | 20d → none |
| CON-LEG101-LR-9100 | Installation of Sand encased duct banks for secondary network [Local – 06 ] | 2027-02-24 → 2026-08-24 A (-184d) | 2027-03-01 → 2027-05-13 (+73d) | 0% → 80% | 20d → 49.05d |
| CON-LEG101-LR-9200 | Installation of Sand and soil encased duct banks, for combined network of primary and secondary [Local – 06 ] | 2027-03-02 → 2026-08-24 A (-190d) | 2027-03-06 → 2027-05-19 (+74d) | 0% → 80% | 20d → 49.05d |
| 11 | **CCTV feeding system and GSM** | 2027-02-16 → 2026-06-06 (-255d) | 2027-03-14 → 2027-05-19 (+66d) |  |  |
| CON-LEG101-LR-9920 | Installation of 25 Meters pole for CCTV Cameras [Local – 06 ] | 2027-03-06 → 2026-06-06 A (-273d) | 2027-03-09 → 2026-07-12 A (-240d) | 0% → 100% | 20d → none |
| CON-LEG101-LR-10010 | Installation of Short Range wireless point to point wireless bridge [Local – 06 ] | 2027-03-10 → 2026-07-20 A (-233d) | 2027-03-14 → 2027-05-19 (+66d) | 0% → 90% | 20d → 63.6d |
| CON-LEG101-LR-9510 | Installation of 8POE ports Industrial Switches for remote poles [Local – 06 ] | 2027-02-16 → 2026-07-20 A (-211d) | 2027-02-24 → 2027-05-13 (+78d) | 0% → 90% | 20d → 57.9d |
| CON-LEG101-LR-9680 | Installation of IP Outdoor CCTV POE Camera,5 MP, Metal Housing [Local – 06 ] | 2027-02-25 → 2026-07-20 A (-220d) | 2027-03-01 → 2027-05-19 (+79d) | 0% → 90% | 20d → 63.6d |
| CON-LEG101-LR-9760 | Installation of Outdoor PTZ IP66 [Local – 06 ] | 2027-03-02 → 2026-07-20 A (-225d) | 2027-03-04 → 2027-05-19 (+76d) | 0% → 90% | 20d → 63.6d |
| 12 | **Earthing System** | 2027-03-16 → 2027-07-06 (+112d) | 2027-03-18 → 2027-07-10 (+114d) |  |  |
| CON-LEG101-LR-15140 | Installation of Earthing for Distribution panels,SL feeder pillars, KWH, Unit substations and RMU [Local – 06 ] | 2027-03-16 → 2027-07-06 (+112d) | 2027-03-18 → 2027-07-10 (+114d) |  | 19d → 23.1d |
| 9 | **Road Lighting** | 2027-02-23 → 2026-03-16 (-344d) | 2027-03-18 → 2027-07-08 (+112d) |  |  |
| CON-LEG101-LR-8150 | Installation of Lighting poles [Local – 06 ] | 2027-02-23 → 2026-03-16 A (-344d) | 2027-03-06 → 2026-08-17 A (-201d) | 0% → 100% | 19d → none |
| CON-LEG101-LR-7470 | Installation of Unit Substation Including concrete foundations and fencing [Local – 06 ] | 2027-03-07 → 2026-07-11 A (-239d) | 2027-03-10 → 2027-07-01 (+113d) | 0% → 30% | 19d → 23.1d |
| CON-LEG101-LR-8250 | Installation of Street Lighting Luminaire [Local – 06 ] | 2027-03-07 → 2026-07-22 A (-228d) | 2027-03-10 → 2026-08-17 A (-205d) | 0% → 100% | 23d → none |
| CON-LEG101-LR-8400 | Installation of Earthing for Streetlighting feeders for every end pole circuits. [Local – 06 ] | 2027-03-16 → 2026-08-12 A (-216d) | 2027-03-18 → 2027-07-08 (+112d) | 0% → 30% | 19d → 24d |
| CON-LEG101-LR-7550 | Installation of Ring Main Unit RMU [Local – 06 ] | 2027-03-11 → 2027-07-01 (+112d) | 2027-03-15 → 2027-07-06 (+113d) |  | 19d → 23.1d |
| 7 | **Local – 07** | 2026-12-08 → 2026-02-03 (-308d) | 2027-03-18 → 2027-07-11 (+115d) |  |  |
| 5 | **TSE Network** | 2026-12-08 → 2026-02-03 (-308d) | 2027-03-02 → 2026-09-05 (-178d) |  |  |
| 2 | **Pipe Work** | 2026-12-08 → 2026-02-03 (-308d) | 2027-01-10 → 2026-05-31 (-224d) |  |  |
| CON-LEG101-LR-1390 | Excavation for TSE Network [Local – 07 ] | 2026-12-08 → 2026-02-03 A (-308d) | 2026-12-15 → 2026-02-09 A (-309d) | 0% → 100% | 26d → none |
| CON-LEG101-LR-1500 | Granular bedding for TSE Network [Local – 07 ] | 2026-12-16 → 2026-02-10 A (-309d) | 2026-12-17 → 2026-02-19 A (-301d) | 0% → 100% | 26d → none |
| CON-LEG101-LR-1610 | Installation of Pipe for TSE Network [Local – 07 ] | 2026-12-19 → 2026-02-11 A (-311d) | 2026-12-26 → 2026-02-21 A (-308d) | 0% → 100% | 26d → none |
| CON-LEG101-LR-1940 | Granular Surround for TSE Network [Local – 07 ] | 2026-12-31 → 2026-02-21 A (-313d) | 2027-01-02 → 2026-02-22 A (-314d) | 0% → 100% | 26d → none |
| CON-LEG101-LR-2050 | Installation of Micron Marker Magnetic Tape [Local – 07 ] | 2027-01-03 → 2026-03-24 A (-285d) | 2027-01-05 → 2026-03-24 A (-287d) | 0% → 100% | 26d → none |
| CON-LEG101-LR-2160 | Backfilling to Subgrade Elevation [Local – 07 ] | 2027-01-06 → 2026-03-25 A (-287d) | 2027-01-10 → 2026-03-26 A (-290d) | 0% → 100% | 26d → none |
| CON-LEG101-LR-1720 | Testing for TSE Network [Local – 07 ] | 2026-12-27 → 2026-05-31 A (-210d) | 2026-12-30 → 2026-05-31 A (-213d) | 0% → 100% | 26d → none |
| 1 | **Valves/Chamber** | 2027-01-27 → 2026-05-03 (-269d) | 2027-03-02 → 2026-09-05 (-178d) |  |  |
| CON-LEG101-LR-2270 | Installation of Gate (Sluice) valves (Direct buried) [Local – 07 ] | 2027-01-27 → 2026-05-03 A (-269d) | 2027-02-07 → 2026-07-15 A (-207d) | 0% → 100% | 28d → none |
| CON-LEG101-LR-2540 | Installation of Fire Hydrant [Local – 07 ] | 2027-02-08 → 2026-06-03 A (-250d) | 2027-03-02 → 2026-09-05 A (-178d) | 0% → 100% | 28d → none |
| 6 | **Public Water Utility Distribution** | 2027-01-19 → 2026-02-03 (-350d) | 2027-03-18 → 2026-08-06 (-224d) |  |  |
| 2 | **Pipe Work** | 2027-01-19 → 2026-02-03 (-350d) | 2027-03-13 → 2026-05-14 (-303d) |  |  |
| CON-LEG101-LR-10120 | Excavation for Public Water Utility Distribution Piping [Local – 07 ] | 2027-01-19 → 2026-02-03 A (-350d) | 2027-01-30 → 2026-02-09 A (-355d) | 0% → 100% | 19d → none |
| CON-LEG101-LR-10220 | Granular bedding for Public Water Utility Distribution Piping [Local – 07 ] | 2027-01-31 → 2026-02-10 A (-355d) | 2027-02-03 → 2026-02-19 A (-349d) | 0% → 100% | 19d → none |
| CON-LEG101-LR-10320 | Installation of Pipe for Public Water Utility Distribution Piping [Local – 07 ] | 2027-02-04 → 2026-02-11 A (-358d) | 2027-02-20 → 2026-02-21 A (-364d) | 0% → 100% | 19d → none |
| CON-LEG101-LR-10620 | Granular Surround for Public Water Utility Distribution Piping [Local – 07 ] | 2027-03-04 → 2026-02-21 A (-376d) | 2027-03-07 → 2026-02-22 A (-378d) | 0% → 100% | 19d → none |
| CON-LEG101-LR-10520 | Concrete encasement, pipe dia 110 mm [Local – 07 ] | 2027-02-25 → 2026-03-17 A (-345d) | 2027-03-03 → 2026-03-17 A (-351d) | 0% → 100% | 19d → none |
| CON-LEG101-LR-10720 | Installation of Micron Marker Magnetic Tape [Local – 07 ] | 2027-03-08 → 2026-03-24 A (-349d) | 2027-03-10 → 2026-03-24 A (-351d) | 0% → 100% | 19d → none |
| CON-LEG101-LR-10820 | Backfilling to Subgrade Elevation [Local – 07 ] | 2027-03-11 → 2026-03-25 A (-351d) | 2027-03-13 → 2026-03-26 A (-352d) | 0% → 100% | 19d → none |
| CON-LEG101-LR-10420 | Testing for Public Water Utility Distribution Piping [Local – 07 ] | 2027-02-21 → 2026-05-13 A (-284d) | 2027-02-24 → 2026-05-14 A (-286d) | 0% → 100% | 19d → none |
| 1 | **Valves/Chamber** | 2027-03-14 → 2026-05-03 (-315d) | 2027-03-18 → 2026-08-06 (-224d) |  |  |
| CON-LEG101-LR-1080 | Installation of Gate (Sluice) valves (Direct buried) [Local – 07 ] | 2027-03-14 → 2026-05-03 A (-315d) | 2027-03-18 → 2026-08-06 A (-224d) | 0% → 100% | 19d → none |
| 1 | **Electrical Works** | 2027-01-31 → 2026-06-01 (-244d) | 2027-02-24 → 2026-07-27 (-212d) |  |  |
| 3 | **Low Voltage** | 2027-01-31 → 2026-06-01 (-244d) | 2027-02-24 → 2026-07-27 (-212d) |  |  |
| CON-LEG101-LR-8060 | Installation of Low Voltage Cables Duct Banks [Local – 07 ] | 2027-02-08 → 2026-06-01 A (-252d) | 2027-02-15 → 2026-06-03 A (-257d) | 0% → 100% | 19d → none |
| CON-LEG101-LR-7860 | Excavation works for Low Voltage Cables [Local – 07 ] | 2027-01-31 → 2026-07-22 A (-193d) | 2027-02-07 → 2026-07-25 A (-197d) | 0% → 100% | 19d → none |
| CON-LEG101-LR-7960 | Installation of Low Voltage Cables [Local – 07 ] | 2027-02-16 → 2026-07-25 A (-206d) | 2027-02-24 → 2026-07-27 A (-212d) | 0% → 100% | 19d → none |
| 10 | **Telecommunications** | 2027-02-20 → 2026-05-20 (-276d) | 2027-03-14 → 2026-09-10 (-185d) |  |  |
| CON-LEG101-LR-9310 | Installation of Concrete encased duct banks for for combined network of primary and secondary [Local – 07 ] | 2027-03-08 → 2026-05-20 A (-292d) | 2027-03-09 → 2026-05-24 A (-289d) | 0% → 100% | 19d → none |
| CON-LEG101-LR-9410 | Installation of Reinforced concrete manhole [Local – 07 ] | 2027-03-10 → 2026-05-20 A (-294d) | 2027-03-14 → 2026-07-06 A (-251d) | 0% → 100% | 19d → none |
| CON-LEG101-LR-8910 | Installation of Sand and soil encased duct banks for primary network [Local – 07 ] | 2027-02-20 → 2026-08-08 A (-196d) | 2027-02-24 → 2026-09-10 A (-167d) | 0% → 100% | 19d → none |
| CON-LEG101-LR-9010 | Installation of Concrete encased duct banks for primary network [Local – 07 ] | 2027-02-25 → 2026-08-08 A (-201d) | 2027-02-27 → 2026-09-10 A (-170d) | 0% → 100% | 19d → none |
| CON-LEG101-LR-9110 | Installation of Sand encased duct banks for secondary network [Local – 07 ] | 2027-02-28 → 2026-08-08 A (-204d) | 2027-03-02 → 2026-09-10 A (-173d) | 0% → 100% | 19d → none |
| CON-LEG101-LR-9210 | Installation of Sand and soil encased duct banks, for combined network of primary and secondary [Local – 07 ] | 2027-03-03 → 2026-08-08 A (-207d) | 2027-03-07 → 2026-09-10 A (-178d) | 0% → 100% | 19d → none |
| 11 | **CCTV feeding system and GSM** | 2027-02-25 → 2026-07-22 (-218d) | 2027-03-04 → 2027-05-13 (+70d) |  |  |
| CON-LEG101-LR-10020 | Installation of Short Range wireless point to point wireless bridge [Local – 07 ] | 2027-02-25 → 2026-07-22 A (-218d) | 2027-03-04 → 2027-05-13 (+70d) | 0% → 90% | 19d → 56.5d |
| 12 | **Earthing System** | 2027-03-15 → 2027-07-06 (+113d) | 2027-03-18 → 2027-07-11 (+115d) |  |  |
| CON-LEG101-LR-15130 | Installation of Earthing for Distribution panels,SL feeder pillars, KWH, Unit substations and RMU [Local – 07 ] | 2027-03-15 → 2027-07-06 (+113d) | 2027-03-18 → 2027-07-11 (+115d) |  | 19d → 21.7d |
| 9 | **Road Lighting** | 2027-02-23 → 2026-05-17 (-282d) | 2027-03-18 → 2027-07-08 (+112d) |  |  |
| CON-LEG101-LR-8160 | Installation of Lighting poles [Local – 07 ] | 2027-02-23 → 2026-05-17 A (-282d) | 2027-03-02 → 2026-08-17 A (-197d) | 0% → 100% | 19d → none |
| CON-LEG101-LR-7480 | Installation of Unit Substation Including concrete foundations and fencing [Local – 07 ] | 2027-03-06 → 2026-07-12 A (-237d) | 2027-03-09 → 2027-07-01 (+114d) | 0% → 40% | 19d → 21.7d |
| CON-LEG101-LR-8260 | Installation of Street Lighting Luminaire [Local – 07 ] | 2027-03-03 → 2026-07-18 A (-228d) | 2027-03-10 → 2026-08-17 A (-205d) | 0% → 100% | 22d → none |
| CON-LEG101-LR-8410 | Installation of Earthing for Streetlighting feeders for every end pole circuits. [Local – 07 ] | 2027-03-15 → 2026-08-26 A (-201d) | 2027-03-18 → 2027-07-08 (+112d) | 0% → 50% | 19d → 23.7d |
| CON-LEG101-LR-7560 | Installation of Ring Main Unit RMU [Local – 07 ] | 2027-03-10 → 2027-07-01 (+113d) | 2027-03-14 → 2027-07-06 (+114d) |  | 19d → 21.7d |
| 8 | **Local – 08** | 2026-08-11 → 2026-01-19 (-204d) | 2027-03-18 → 2027-07-10 (+114d) |  |  |
| 5 | **TSE Network** | 2026-08-11 → 2026-01-19 (-204d) | 2027-03-18 → 2026-11-14 (-124d) |  |  |

| ID | Task | Start | Finish | Complete | Total float |
| --- | --- | --- | --- | --- | --- |
| 2 | **Pipe Work** | 2026-08-11 → 2026-01-19 (-204d) | 2026-11-08 → 2026-04-16 (-206d) |  |  |
| CON-LEG101-LR-1400 | Excavation for TSE Network [Local – 08 ] | 2026-08-11 → 2026-01-19 A (-204d) | 2026-08-23 → 2026-01-25 A (-210d) | 0% → 100% | 19d → none |
| CON-LEG101-LR-1510 | Granular bedding for TSE Network [Local – 08 ] | 2026-08-24 → 2026-01-26 A (-210d) | 2026-09-02 → 2026-02-11 A (-203d) | 0% → 100% | 19d → none |
| CON-LEG101-LR-1620 | Installation of Pipe for TSE Network [Local – 08 ] | 2026-09-03 → 2026-01-27 A (-219d) | 2026-09-20 → 2026-02-18 A (-214d) | 0% → 100% | 19d → none |
| CON-LEG101-LR-1950 | Granular Surround for TSE Network [Local – 08 ] | 2026-10-05 → 2026-01-29 A (-249d) | 2026-10-14 → 2026-02-19 A (-237d) | 0% → 100% | 19d → none |
| CON-LEG101-LR-1840 | Concrete encasement, pipe dia 110 mm [Local – 08 ] | 2026-10-03 → 2026-02-11 A (-234d) | 2026-10-04 → 2026-02-21 A (-225d) | 0% → 100% | 19d → none |
| CON-LEG101-LR-2060 | Installation of Micron Marker Magnetic Tape [Local – 08 ] | 2026-10-15 → 2026-02-21 A (-236d) | 2026-10-19 → 2026-02-22 A (-239d) | 0% → 100% | 19d → none |
| CON-LEG101-LR-2170 | Backfilling to Subgrade Elevation [Local – 08 ] | 2026-10-20 → 2026-02-22 A (-240d) | 2026-11-08 → 2026-02-23 A (-258d) | 0% → 100% | 19d → none |
| CON-LEG101-LR-1730 | Testing for TSE Network [Local – 08 ] | 2026-09-21 → 2026-04-15 A (-159d) | 2026-10-01 → 2026-04-16 A (-168d) | 0% → 100% | 19d → none |
| 1 | **Valves/Chamber** | 2026-11-09 → 2026-03-04 (-250d) | 2027-03-18 → 2026-11-14 (-124d) |  |  |
| CON-LEG101-LR-2280 | Installation of Gate (Sluice) valves (Direct buried) [Local – 08 ] | 2026-12-28 → 2026-03-04 A (-299d) | 2027-01-12 → 2026-08-06 A (-159d) | 0% → 100% | 19d → none |
| CON-LEG101-LR-2370 | Installation of Wash-out Valves [Local – 08 ] | 2027-01-13 → 2026-03-04 A (-315d) | 2027-01-30 → 2026-08-06 A (-177d) | 0% → 100% | 19d → none |
| CON-LEG101-LR-2450 | Installation of Air Valves [Local – 08 ] | 2027-01-31 → 2026-03-04 A (-333d) | 2027-02-21 → 2026-08-06 A (-199d) | 0% → 100% | 19d → none |
| CON-LEG101-LR-2550 | Installation of Fire Hydrant [Local – 08 ] | 2027-02-23 → 2026-03-05 A (-355d) | 2027-03-18 → 2026-09-30 A (-169d) | 0% → 100% | 19d → none |
| CON-LEG101-LR-2750 | Installation of Air Valve chambers [Local – 08 ] | 2026-12-03 → 2026-04-16 A (-231d) | 2026-12-27 → 2026-11-14 (-43d) | 0% → 95% | 19d → 210.9d |
| CON-LEG101-LR-2670 | Installation of Wash out chambers [Local – 08 ] | 2026-11-09 → 2026-04-30 A (-193d) | 2026-12-02 → 2026-11-12 (-20d) | 0% → 95% | 19d → 210.9d |
| 6 | **Public Water Utility Distribution** | 2026-11-09 → 2026-03-07 (-247d) | 2027-03-18 → 2026-08-06 (-224d) |  |  |
| 2 | **Pipe Work** | 2026-11-09 → 2026-03-07 (-247d) | 2027-01-16 → 2026-04-16 (-275d) |  |  |
| CON-LEG101-LR-10130 | Excavation for Public Water Utility Distribution Piping [Local – 08 ] | 2026-11-09 → 2026-03-07 A (-247d) | 2026-11-21 → 2026-03-10 A (-256d) | 0% → 100% | 19d → none |
| CON-LEG101-LR-10230 | Granular bedding for Public Water Utility Distribution Piping [Local – 08 ] | 2026-11-22 → 2026-03-11 A (-256d) | 2026-11-30 → 2026-03-14 A (-261d) | 0% → 100% | 19d → none |
| CON-LEG101-LR-10330 | Installation of Pipe for Public Water Utility Distribution Piping [Local – 08 ] | 2026-12-01 → 2026-03-15 A (-261d) | 2026-12-13 → 2026-03-24 A (-264d) | 0% → 100% | 19d → none |
| CON-LEG101-LR-10530 | Concrete encasement, pipe dia 110 mm [Local – 08 ] | 2026-12-23 → 2026-03-26 A (-272d) | 2026-12-26 → 2026-03-26 A (-275d) | 0% → 100% | 19d → none |
| CON-LEG101-LR-10630 | Granular Surround for Public Water Utility Distribution Piping [Local – 08 ] | 2026-12-27 → 2026-03-28 A (-274d) | 2027-01-04 → 2026-03-28 A (-282d) | 0% → 100% | 19d → none |
| CON-LEG101-LR-10730 | Installation of Micron Marker Magnetic Tape [Local – 08 ] | 2027-01-05 → 2026-03-29 A (-282d) | 2027-01-07 → 2026-03-30 A (-283d) | 0% → 100% | 19d → none |
| CON-LEG101-LR-10830 | Backfilling to Subgrade Elevation [Local – 08 ] | 2027-01-09 → 2026-03-31 A (-284d) | 2027-01-16 → 2026-04-02 A (-289d) | 0% → 100% | 19d → none |
| CON-LEG101-LR-10430 | Testing for Public Water Utility Distribution Piping [Local – 08 ] | 2026-12-14 → 2026-04-16 A (-242d) | 2026-12-22 → 2026-04-16 A (-250d) | 0% → 100% | 19d → none |
| 1 | **Valves/Chamber** | 2027-03-14 → 2026-05-03 (-315d) | 2027-03-18 → 2026-08-06 (-224d) |  |  |
| CON-LEG101-LR-1090 | Installation of Gate (Sluice) valves (Direct buried) [Local – 08 ] | 2027-03-14 → 2026-05-03 A (-315d) | 2027-03-18 → 2026-08-06 A (-224d) | 0% → 100% | 19d → none |
| 1 | **Electrical Works** | 2027-01-17 → 2026-07-07 (-194d) | 2027-03-02 → 2027-06-06 (+96d) |  |  |
| 3 | **Low Voltage** | 2027-01-17 → 2026-07-07 (-194d) | 2027-03-02 → 2027-06-06 (+96d) |  |  |
| CON-LEG101-LR-8070 | Installation of Low Voltage Cables Duct Banks [Local – 08 ] | 2027-01-28 → 2026-07-07 A (-205d) | 2027-02-08 → 2026-07-09 A (-214d) | 0% → 100% | 20d → none |
| CON-LEG101-LR-7870 | Excavation works for Low Voltage Cables [Local – 08 ] | 2027-01-17 → 2026-08-18 A (-152d) | 2027-01-27 → 2026-08-27 A (-153d) | 0% → 100% | 19d → none |
| CON-LEG101-LR-7970 | Installation of Low Voltage Cables [Local – 08 ] | 2027-02-14 → 2026-08-19 A (-179d) | 2027-02-21 → 2026-08-27 A (-178d) | 0% → 100% | 20d → none |
| CON-LEG101-LR-8500 | Installation of Low Voltage Distribution Panel [Local – 08 ] | 2027-02-23 → 2027-05-30 (+96d) | 2027-03-02 → 2027-06-06 (+96d) |  | 20d → 40.2d |
| 10 | **Telecommunications** | 2027-01-28 → 2026-07-07 (-205d) | 2027-03-16 → 2027-06-08 (+84d) |  |  |
| CON-LEG101-LR-9020 | Installation of Concrete encased duct banks for primary network [Local – 08 ] | 2027-02-07 → 2026-07-07 A (-215d) | 2027-02-20 → 2026-07-09 A (-226d) | 0% → 100% | 19d → none |
| CON-LEG101-LR-9320 | Installation of Concrete encased duct banks for for combined network of primary and secondary [Local – 08 ] | 2027-03-04 → 2026-07-07 A (-240d) | 2027-03-09 → 2026-07-09 A (-243d) | 0% → 100% | 19d → none |
| CON-LEG101-LR-8920 | Installation of Sand and soil encased duct banks for primary network [Local – 08 ] | 2027-01-28 → 2026-09-22 A (-128d) | 2027-02-06 → 2026-11-14 (-84d) | 0% → 70% | 19d → 200.6d |
| CON-LEG101-LR-9120 | Installation of Sand encased duct banks for secondary network [Local – 08 ] | 2027-02-21 → 2026-09-23 A (-151d) | 2027-02-27 → 2027-01-12 (-46d) | 0% → 70% | 19d → 154.5d |
| CON-LEG101-LR-9220 | Installation of Sand and soil encased duct banks, for combined network of primary and secondary [Local – 08 ] | 2027-02-28 → 2026-09-24 A (-157d) | 2027-03-03 → 2027-01-13 (-49d) | 0% → 70% | 19d → 154.5d |
| CON-LEG101-LR-9420 | Installation of Reinforced concrete manhole [Local – 08 ] | 2027-03-10 → 2026-09-26 A (-165d) | 2027-03-16 → 2027-06-08 (+84d) | 0% → 70% | 19d → 40.2d |
| 11 | **CCTV feeding system and GSM** | 2027-02-07 → 2026-07-05 (-217d) | 2027-03-11 → 2027-06-07 (+88d) |  |  |
| CON-LEG101-LR-9930 | Installation of 25 Meters pole for CCTV Cameras [Local – 08 ] | 2027-02-24 → 2026-07-05 A (-234d) | 2027-03-03 → 2026-07-11 A (-235d) | 0% → 100% | 23d → none |
| CON-LEG101-LR-10030 | Installation of Short Range wireless point to point wireless bridge [Local – 08 ] | 2027-03-04 → 2026-07-25 A (-222d) | 2027-03-11 → 2027-06-07 (+88d) | 0% → 90% | 23d → 41.3d |
| CON-LEG101-LR-9770 | Installation of Outdoor PTZ IP66 [Local – 08 ] | 2027-02-07 → 2026-07-25 A (-197d) | 2027-02-14 → 2027-01-11 (-34d) | 0% → 90% | 23d → 151d |
| CON-LEG101-LR-9820 | Installation of LED Screen 43" (24/7 operation) with Ethernet decoders [Local – 08 ] | 2027-02-15 → 2027-05-30 (+104d) | 2027-02-23 → 2027-06-06 (+103d) |  | 23d → 41.3d |
| 12 | **Earthing System** | 2027-03-17 → 2027-07-07 (+112d) | 2027-03-18 → 2027-07-10 (+114d) |  |  |
| CON-LEG101-LR-8320 | Installation of Earthing for Distribution panels,SL feeder pillars, KWH, Unit substations and RMU [Local – 08 ] | 2027-03-17 → 2027-07-07 (+112d) | 2027-03-18 → 2027-07-10 (+114d) |  | 19d → 15.6d |
| 9 | **Road Lighting** | 2027-02-23 → 2026-04-19 (-310d) | 2027-03-18 → 2027-07-10 (+114d) |  |  |
| CON-LEG101-LR-8170 | Installation of Lighting poles [Local – 08 ] | 2027-02-23 → 2026-04-19 A (-310d) | 2027-03-02 → 2027-06-29 (+119d) | 0% → 90% | 19d → -55.2d |
| CON-LEG101-LR-7490 | Installation of Unit Substation Including concrete foundations and fencing [Local – 08 ] | 2027-03-03 → 2026-07-18 A (-228d) | 2027-03-07 → 2027-07-01 (+116d) | 0% → 30% | 19d → 15.6d |
| CON-LEG101-LR-8270 | Installation of Street Lighting Luminaire [Local – 08 ] | 2027-03-03 → 2026-08-22 A (-193d) | 2027-03-07 → 2027-06-29 (+114d) | 0% → 90% | 27d → 29.8d |
| CON-LEG101-LR-8470 | Installation of Street Lighting feeder pillars / Lighting panels [Local – 08 ] | 2027-03-13 → 2026-09-05 A (-189d) | 2027-03-16 → 2027-07-07 (+113d) | 0% → 90% | 19d → 15.6d |
| CON-LEG101-LR-7570 | Installation of Ring Main Unit RMU [Local – 08 ] | 2027-03-08 → 2027-07-03 (+117d) | 2027-03-11 → 2027-07-06 (+117d) |  | 19d → 15.6d |
| CON-LEG101-LR-8420 | Installation of Earthing for Streetlighting feeders for every end pole circuits. [Local – 08 ] | 2027-03-17 → 2027-07-07 (+112d) | 2027-03-18 → 2027-07-10 (+114d) |  | 19d → 23d |
| 3 | **Bridge** | 2026-03-04 → 2026-01-17 (-46d) | 2027-06-01 → 2027-08-15 (+75d) |  |  |
| 1 | **Substructure** | 2026-03-04 → 2026-01-17 (-46d) | 2026-08-09 → 2026-08-01 (-8d) |  |  |
| 1 | **Earth Work** | 2026-03-04 → 2026-01-17 (-46d) | 2026-06-03 → 2026-08-01 (+59d) |  |  |
| CON-LEG101-BR-1000 | Excavation for Bridge [Bridge ] | 2026-03-04 → 2026-01-17 A (-46d) | 2026-04-01 → 2026-02-15 A (-45d) | 0% → 100% | 8d → none |
| CON-LEG101-BR-1010 | Parcrels Excavation for Bridge [Bridge ] | 2026-04-02 → 2026-01-17 A (-75d) | 2026-04-26 → 2026-02-15 A (-70d) | 0% → 100% | 8d → none |
| CON-LEG101-BR-1240 | Embankments to the parcels for Bridge [Bridge ] | 2026-05-14 → 2026-01-24 A (-110d) | 2026-06-03 → 2026-02-17 A (-106d) | 0% → 100% | 8d → none |
| CON-LEG101-BR-1140 | Embankments to the Bridge [Bridge ] | 2026-04-27 → 2026-05-17 A (+20d) | 2026-05-13 → 2026-08-01 A (+80d) | 0% → 100% | 8d → none |
| 2 | **Piling** | 2026-06-04 → 2026-01-18 (-137d) | 2026-06-28 → 2026-03-14 (-106d) |  |  |
| CON-LEG101-BR-1020 | Reinforced concrete Piles [Bridge ] | 2026-06-04 → 2026-01-18 A (-137d) | 2026-06-28 → 2026-03-14 A (-106d) | 0% → 100% | 8d → none |
| 3 | **Pile Caps & Abutments** | 2026-06-29 → 2026-02-15 (-134d) | 2026-08-09 → 2026-05-20 (-81d) |  |  |
| CON-LEG101-BR-1030 | Reinforced concrete for pile caps and abutment [Bridge ] | 2026-06-29 → 2026-02-15 A (-134d) | 2026-07-22 → 2026-03-28 A (-116d) | 0% → 100% | 14d → none |
| CON-LEG101-BR-1180 | Installation of Elastomeric Bearings [Bridge ] | 2026-07-23 → 2026-03-01 A (-144d) | 2026-08-09 → 2026-05-20 A (-81d) | 0% → 100% | 14d → none |
| 2 | **Superstructure** | 2026-06-29 → 2026-02-10 (-139d) | 2027-01-20 → 2026-08-17 (-156d) |  |  |
| 1 | **Girder** | 2026-06-29 → 2026-02-10 (-139d) | 2026-10-05 → 2026-06-23 (-104d) |  |  |
| 1 | **Casting** | 2026-06-29 → 2026-02-10 (-139d) | 2026-08-16 → 2026-04-26 (-112d) |  |  |

| ID | Task | Start | Finish | Complete | Total float |
| --- | --- | --- | --- | --- | --- |
| CON-LEG101-BR-1100 | Steel Reinforced Work | 2026-06-29 → 2026-02-10 A (-139d) | 2026-07-22 → 2026-04-23 A (-90d) | 0% → 100% | 8d → none |
| CON-LEG101-BR-1110 | Formwork and Casting | 2026-07-23 → 2026-03-16 A (-129d) | 2026-08-16 → 2026-04-26 A (-112d) | 0% → 100% | 8d → none |
| 2 | **Installation** | 2026-08-17 → 2026-04-30 (-109d) | 2026-10-05 → 2026-06-23 (-104d) |  |  |
| CON-LEG101-BR-1120 | Prestressing Strands | 2026-08-17 → 2026-04-30 A (-109d) | 2026-09-09 → 2026-05-18 A (-114d) | 0% → 100% | 8d → none |
| CON-LEG101-BR-1130 | Installation of Girder | 2026-09-10 → 2026-06-21 A (-81d) | 2026-10-05 → 2026-06-23 A (-104d) | 0% → 100% | 8d → none |
| 2 | **Slab Casting** | 2026-10-06 → 2026-07-01 (-97d) | 2027-01-20 → 2026-08-17 (-156d) |  |  |
| 1 | **Top Slabs** | 2026-10-06 → 2026-07-01 (-97d) | 2026-12-05 → 2026-07-12 (-146d) |  |  |
| CON-LEG101-BR-1050 | Formwork for Top Slab | 2026-10-06 → 2026-07-01 A (-97d) | 2026-10-29 → 2026-07-09 A (-112d) | 0% → 100% | 8d → none |
| CON-LEG101-BR-1040 | Steel Reinforced Work for Top Slab | 2026-10-31 → 2026-07-02 A (-121d) | 2026-11-23 → 2026-07-08 A (-138d) | 0% → 100% | 8d → none |
| CON-LEG101-BR-1060 | Casting Concrete & Treatment for Top Slab | 2026-11-24 → 2026-07-12 A (-135d) | 2026-12-05 → 2026-07-12 A (-146d) | 0% → 100% | 8d → none |
| 2 | **Apron Slabs** | 2026-12-06 → 2026-08-05 (-123d) | 2027-01-20 → 2026-08-17 (-156d) |  |  |
| CON-LEG101-BR-1250 | Lean concrete For Apron Slab [Bridge ] | 2026-12-06 → 2026-08-05 A (-123d) | 2026-12-09 → 2026-08-05 A (-126d) | 0% → 100% | 8d → none |
| CON-LEG101-BR-1070 | Steel Reinforced Work for Apron Slab | 2026-12-10 → 2026-08-08 A (-124d) | 2026-12-27 → 2026-08-17 A (-132d) | 0% → 100% | 8d → none |
| CON-LEG101-BR-1080 | Formwork Work for Apron Slab | 2026-12-28 → 2026-08-09 A (-141d) | 2027-01-13 → 2026-08-17 A (-149d) | 0% → 100% | 8d → none |
| CON-LEG101-BR-1090 | Casting Concrete Work & Treatment for Apron Slab | 2027-01-14 → 2026-08-11 A (-156d) | 2027-01-20 → 2026-08-17 A (-156d) | 0% → 100% | 12d → none |
| 3 | **Bridge Finishing** | 2027-01-26 → 2026-07-13 (-197d) | 2027-06-01 → 2027-08-15 (+75d) |  |  |
| CON-LEG101-BR-1150 | Installation of New Jersey [Bridge ] | 2027-01-26 → 2026-07-13 A (-197d) | 2027-02-23 → 2026-08-06 A (-201d) | 0% → 100% | 8d → none |
| CON-LEG101-BR-1270 | Installation of Lighting poles [Bridge ] | 2027-03-03 → 2026-09-23 A (-161d) | 2027-03-23 → 2026-09-26 A (-178d) | 0% → 100% | 24d → none |
| CON-LEG101-BR-1160 | Membrane waterproofing for concert in touch with soil and membrane waterproofing for bridge slab [Bridge ] | 2027-02-24 → 2026-10-07 (-140d) | 2027-03-07 → 2026-10-18 (-140d) |  | 8d → 123d |
| CON-LEG101-BR-1170 | Placing of Protective Coating for Concrete Surfaces [Bridge ] | 2027-03-08 → 2026-10-19 (-140d) | 2027-03-22 → 2026-11-02 (-140d) |  | 8d → 123d |
| CON-LEG101-BR-1260 | Asphalt Wearing Cource | 2027-03-23 → 2026-11-03 (-140d) | 2027-03-25 → 2026-11-05 (-140d) |  | 8d → 123d |
| CON-LEG101-BR-1190 | Installation of expansion joints for bridges [Bridge ] | 2027-03-27 → 2026-11-07 (-140d) | 2027-04-11 → 2026-11-22 (-140d) |  | 8d → 123d |
| CON-LEG101-BR-1200 | Installation of Guard Rail [Bridge ] | 2027-04-12 → 2027-06-29 (+78d) | 2027-05-04 → 2027-07-22 (+79d) |  | 8d → -55.2d |
| CON-LEG101-BR-1210 | Installation of GRP Panel [Bridge ] | 2027-05-05 → 2027-07-22 (+78d) | 2027-05-20 → 2027-08-03 (+75d) |  | 8d → -55.2d |
| CON-LEG101-BR-1220 | Installation of Logo MODON [Bridge ] | 2027-05-22 → 2027-08-03 (+73d) | 2027-06-01 → 2027-08-15 (+75d) |  | 8d → -55.2d |
| 4 | **Drainage** | 2027-01-14 → 2026-07-09 (-189d) | 2027-01-25 → 2026-07-11 (-198d) |  |  |
| 1 | **Gully Installation** | 2027-01-14 → 2026-07-09 (-189d) | 2027-01-25 → 2026-07-11 (-198d) |  |  |
| CON-LEG101-BR-1230 | Installation of Bridge Gully (Scupper) drainage units [Bridge ] | 2027-01-14 → 2026-07-09 A (-189d) | 2027-01-25 → 2026-07-11 A (-198d) | 0% → 100% | 8d → none |
| 4 | **Outside Boundary Area (Tie-in Lines)** | 2026-01-01 → 2026-01-05 (+4d) | 2027-05-04 → 2027-06-06 (+33d) |  |  |
| 1 | **Permits & Prepation works for Construction** | 2026-01-01 → 2026-01-05 (+4d) | 2026-04-14 → 2026-04-16 (+2d) |  |  |
| CON-LEG101-OBA-1230 | Permits for Starting Works | 2026-01-01 → 2026-01-05 A (+4d) | 2026-01-24 → 2026-02-12 A (+19d) | 0% → 100% | 7d → none |
| CON-LEG101-OBA-1240 | As Built for Existing Utilites | 2026-01-25 → 2026-01-07 A (-18d) | 2026-02-17 → 2026-02-14 A (-3d) | 0% → 100% | 7d → none |
| CON-LEG101-OBA-1270 | Detour & Safety works | 2026-04-04 → 2026-02-12 A (-51d) | 2026-04-14 → 2026-04-16 A (+2d) | 0% → 100% | 7d → none |
| CON-LEG101-OBA-1250 | Submission of Engineering Works | 2026-02-18 → 2026-02-15 A (-3d) | 2026-03-15 → 2026-04-09 A (+25d) | 0% → 100% | 7d → none |
| CON-LEG101-OBA-1260 | Approval of Engineering Works | 2026-03-16 → 2026-02-19 A (-25d) | 2026-04-02 → 2026-04-15 A (+13d) | 0% → 100% | 7d → none |
| 4 | **Sanitary Sewerage** | 2026-04-15 → 2026-02-14 (-60d) | 2026-10-06 → 2026-10-08 (+2d) |  |  |
| 2 | **Pipe Work** | 2026-04-15 → 2026-02-14 (-60d) | 2026-09-10 → 2026-05-11 (-122d) |  |  |
| CON-LEG101-OBA-1080 | Excavation for Sanitary Sewerage Network [Outside Boundary Area ] | 2026-04-15 → 2026-02-14 A (-60d) | 2026-05-09 → 2026-05-03 A (-6d) | 0% → 100% | 16d → none |
| CON-LEG101-OBA-1090 | Granular bedding for Sanitary Sewerage Network [Outside Boundary Area ] | 2026-05-10 → 2026-02-15 A (-84d) | 2026-06-03 → 2026-05-04 A (-30d) | 0% → 100% | 16d → none |
| CON-LEG101-OBA-1100 | Installation of Pipe for Sanitary Sewerage Network [Outside Boundary Area ] | 2026-06-04 → 2026-02-16 A (-108d) | 2026-06-28 → 2026-05-06 A (-53d) | 0% → 100% | 16d → none |
| CON-LEG101-OBA-1120 | Granular Surround for Sanitary Sewerage Network [Outside Boundary Area ] | 2026-07-23 → 2026-02-16 A (-157d) | 2026-08-12 → 2026-05-09 A (-95d) | 0% → 100% | 16d → none |
| CON-LEG101-OBA-1110 | Testing for Sanitary Sewerage Network [Outside Boundary Area ] | 2026-06-29 → 2026-03-10 A (-111d) | 2026-07-22 → 2026-05-07 A (-76d) | 0% → 100% | 16d → none |
| CON-LEG101-OBA-1130 | Installation of Micron Marker Magnetic Tape [Outside Boundary Area ] | 2026-08-13 → 2026-03-11 A (-155d) | 2026-08-20 → 2026-05-10 A (-102d) | 0% → 100% | 16d → none |
| CON-LEG101-OBA-1140 | Backfilling to Subgrade Elevation [Outside Boundary Area ] | 2026-08-22 → 2026-03-12 A (-163d) | 2026-09-10 → 2026-05-11 A (-122d) | 0% → 100% | 16d → none |
| 1 | **Manhole** | 2026-09-12 → 2026-02-14 (-210d) | 2026-10-06 → 2026-10-08 (+2d) |  |  |
| CON-LEG101-OBA-1150 | Installation of Fiberglass Manholes [Outside Boundary Area ] | 2026-09-12 → 2026-02-14 A (-210d) | 2026-10-06 → 2026-10-08 (+2d) | 0% → 95% | 16d → 232.13d |
| 3 | **TSE Network** | 2026-10-10 → 2026-05-05 (-158d) | 2026-12-22 → 2027-06-06 (+166d) |  |  |
| 2 | **Pipe Work** | 2026-10-10 → 2026-05-05 (-158d) | 2026-12-21 → 2026-07-02 (-172d) |  |  |
| CON-LEG101-OBA-1000 | Excavation for TSE Network [Outside Boundary Area ] | 2026-10-10 → 2026-05-05 A (-158d) | 2026-10-20 → 2026-06-16 A (-126d) | 0% → 100% | 14d → none |
| CON-LEG101-OBA-1010 | Granular bedding for TSE Network [Outside Boundary Area ] | 2026-10-21 → 2026-05-07 A (-167d) | 2026-10-29 → 2026-06-17 A (-134d) | 0% → 100% | 14d → none |
| CON-LEG101-OBA-1020 | Installation of Pipe for TSE Network [Outside Boundary Area ] | 2026-10-31 → 2026-05-09 A (-175d) | 2026-11-11 → 2026-06-18 A (-146d) | 0% → 100% | 14d → none |
| CON-LEG101-OBA-1040 | Granular Surround for TSE Network [Outside Boundary Area ] | 2026-11-22 → 2026-05-20 A (-186d) | 2026-11-30 → 2026-06-20 A (-163d) | 0% → 100% | 14d → none |
| CON-LEG101-OBA-1050 | Installation of Micron Marker Magnetic Tape [Outside Boundary Area ] | 2026-12-01 → 2026-05-21 A (-194d) | 2026-12-03 → 2026-06-21 A (-165d) | 0% → 100% | 14d → none |
| CON-LEG101-OBA-1060 | Backfilling to Subgrade Elevation [Outside Boundary Area ] | 2026-12-05 → 2026-05-24 A (-195d) | 2026-12-21 → 2026-06-22 A (-182d) | 0% → 100% | 14d → none |
| CON-LEG101-OBA-1030 | Testing for TSE Network [Outside Boundary Area ] | 2026-11-12 → 2026-07-01 A (-134d) | 2026-11-21 → 2026-07-02 A (-142d) | 0% → 100% | 14d → none |
| 1 | **Valves/Chamber** | 2026-12-05 → 2026-06-13 (-175d) | 2026-12-22 → 2027-06-06 (+166d) |  |  |
| CON-LEG101-OBA-1070 | Installation of Butterfly valves (In Chamber) [Outside Boundary Area ] | 2026-12-16 → 2026-06-13 A (-186d) | 2026-12-22 → 2027-06-06 (+166d) | 0% → 98% | 14d → 35.18d |
| CON-LEG101-OBA-1500 | Installation of Valve Chamber [Outside Boundary Area ] | 2026-12-05 → 2026-06-13 A (-175d) | 2026-12-15 → 2027-06-06 (+173d) | 0% → 98% | 14d → 35.18d |
| 5 | **Public Water Utility Distribution** | 2026-04-15 → 2026-04-01 (-14d) | 2027-05-04 → 2026-10-10 (-206d) |  |  |
| 3 | **Public Water Utility Distribution (0 - 900) m** | 2026-04-15 → 2026-05-06 (+21d) | 2026-08-04 → 2026-10-08 (+65d) |  |  |
| 2 | **Pipe Work** | 2026-04-15 → 2026-05-06 (+21d) | 2026-08-04 → 2026-07-23 (-12d) |  |  |
| CON-LEG101-OBA-1160 | Excavation for Public Water Utility Distribution Piping [Outside Boundary Area ] 0 - 900 m | 2026-04-15 → 2026-05-06 A (+21d) | 2026-05-09 → 2026-06-18 A (+40d) | 0% → 100% | 7d → none |
| CON-LEG101-OBA-1170 | Granular bedding for Public Water Utility Distribution Piping [Outside Boundary Area ] 0 - 900 m | 2026-05-10 A | 2026-05-24 → 2026-06-27 A (+34d) | 0% → 100% | 7d → none |
| CON-LEG101-OBA-1180 | Installation of Pipe for Public Water Utility Distribution Piping [Outside Boundary Area ] 0 - 900 m | 2026-05-25 → 2026-05-12 A (-13d) | 2026-06-20 → 2026-06-28 A (+8d) | 0% → 100% | 7d → none |
| CON-LEG101-OBA-1200 | Granular Surround for Public Water Utility Distribution Piping [Outside Boundary Area ] 0 - 900 m | 2026-07-06 → 2026-07-04 A (-2d) | 2026-07-20 → 2026-07-05 A (-15d) | 0% → 100% | 7d → none |
| CON-LEG101-OBA-1210 | Installation of Micron Marker Magnetic Tape [Outside Boundary Area ] 0 - 900 m | 2026-07-21 → 2026-07-06 A (-15d) | 2026-07-23 → 2026-07-07 A (-16d) | 0% → 100% | 7d → none |
| CON-LEG101-OBA-1220 | Backfilling to Subgrade Elevation [Outside Boundary Area ] 0 - 900 m | 2026-07-25 → 2026-07-08 A (-17d) | 2026-08-04 → 2026-07-09 A (-26d) | 0% → 100% | 7d → none |
| CON-LEG101-OBA-1190 | Testing for Public Water Utility Distribution Piping [Outside Boundary Area ] 0 - 900 m | 2026-06-21 → 2026-07-22 A (+31d) | 2026-07-05 → 2026-07-23 A (+18d) | 0% → 100% | 7d → none |
| 1 | **Valves/Chamber** | 2026-06-21 → 2026-06-07 (-14d) | 2026-07-26 → 2026-10-08 (+74d) |  |  |
| CON-LEG101-OBA-1420 | Installation of Air Valve chambers [Outside Boundary Area ] 0 - 900 m | 2026-06-21 → 2026-06-07 A (-14d) | 2026-07-14 → 2026-10-08 (+86d) | 0% → 95% | 15d → 231.21d |

| ID | Task | Start | Finish | Complete | Total float |
| --- | --- | --- | --- | --- | --- |
| CON-LEG101-OBA-1430 | Installation of Air Valves [Outside Boundary Area ] 0 - 900 m | 2026-07-15 → 2026-06-07 A (-38d) | 2026-07-26 → 2026-10-08 (+74d) | 0% → 95% | 15d → 231.21d |
| 1 | **Public Water Utility Distribution (901 - 1800) m** | 2026-08-05 → 2026-04-01 (-126d) | 2026-12-23 → 2026-10-10 (-74d) |  |  |
| CON-LEG101-OBA-1460 | Permits for Starting Works for Area 901 - 1800 m | 2026-08-05 → 2026-04-01 A (-126d) | 2026-08-18 → 2026-04-01 A (-139d) | 0% → 100% | 7d → none |
| CON-LEG101-OBA-1470 | Detour & Safety works for Area 901 - 1800 m | 2026-08-19 → 2026-04-02 A (-139d) | 2026-08-27 → 2026-04-04 A (-145d) | 0% → 100% | 7d → none |
| 2 | **Pipe Work** | 2026-08-29 → 2026-04-05 (-146d) | 2026-12-16 → 2026-09-06 (-101d) |  |  |
| CON-LEG101-OBA-1280 | Excavation for Public Water Utility Distribution Piping [Outside Boundary Area ] 901 - 1800 m | 2026-08-29 → 2026-04-05 A (-146d) | 2026-09-21 → 2026-05-05 A (-139d) | 0% → 100% | 7d → none |
| CON-LEG101-OBA-1290 | Granular bedding for Public Water Utility Distribution Piping [Outside Boundary Area ] 901 - 1800 m | 2026-09-22 → 2026-04-21 A (-154d) | 2026-10-07 → 2026-05-10 A (-150d) | 0% → 100% | 7d → none |
| CON-LEG101-OBA-1300 | Installation of Pipe for Public Water Utility Distribution Piping [Outside Boundary Area ] 901 - 1800 m | 2026-10-08 → 2026-04-23 A (-168d) | 2026-11-01 → 2026-05-12 A (-173d) | 0% → 100% | 7d → none |
| CON-LEG101-OBA-1320 | Granular Surround for Public Water Utility Distribution Piping [Outside Boundary Area ] 901 - 1800 m | 2026-11-17 → 2026-05-13 A (-188d) | 2026-12-01 → 2026-05-18 A (-197d) | 0% → 100% | 7d → none |
| CON-LEG101-OBA-1330 | Installation of Micron Marker Magnetic Tape [Outside Boundary Area ] 901 - 1800 m | 2026-12-02 → 2026-05-19 A (-197d) | 2026-12-05 → 2026-05-20 A (-199d) | 0% → 100% | 7d → none |
| CON-LEG101-OBA-1340 | Backfilling to Subgrade Elevation [Outside Boundary Area ] 901 - 1800 m | 2026-12-06 → 2026-05-21 A (-199d) | 2026-12-16 → 2026-05-23 A (-207d) | 0% → 100% | 7d → none |
| CON-LEG101-OBA-1310 | Testing for Public Water Utility Distribution Piping [Outside Boundary Area ] 901 - 1800 m | 2026-11-02 → 2026-07-25 A (-100d) | 2026-11-16 → 2026-09-06 A (-71d) | 0% → 100% | 7d → none |
| 1 | **Valves/Chamber** | 2026-11-02 → 2026-06-03 (-152d) | 2026-12-23 → 2026-10-10 (-74d) |  |  |
| CON-LEG101-OBA-1440 | Installation of Air Valve chambers [Outside Boundary Area ] 901 - 1800 m | 2026-11-02 → 2026-06-03 A (-152d) | 2026-11-25 → 2026-10-08 (-48d) | 0% → 98% | 15d → 231.21d |
| CON-LEG101-OBA-1450 | Installation of Air Valves [Outside Boundary Area ] 901 - 1800 m | 2026-11-26 → 2026-08-01 A (-117d) | 2026-12-07 → 2026-10-10 (-58d) | 0% → 98% | 15d → 231.21d |
| CON-LEG101-OBA-1510 | Installation of Butterfly valves, on pipe with diameter 400 mm | 2026-12-17 → 2026-08-03 A (-136d) | 2026-12-23 → 2026-10-10 (-74d) | 0% → 98% | 7d → 231.21d |
| 2 | **Public Water Utility Distribution (1801 - 2780) m** | 2026-12-24 → 2026-04-25 (-243d) | 2027-05-04 → 2026-09-07 (-239d) |  |  |
| CON-LEG101-OBA-1490 | Permits for Starting Works for Area 1800 - 2780 m | 2026-12-24 → 2026-04-25 A (-243d) | 2027-01-06 → 2026-04-25 A (-256d) | 0% → 100% | 7d → none |
| CON-LEG101-OBA-1480 | Detour & Safety works for Area 1800 - 2780 m | 2027-01-07 → 2026-04-26 A (-256d) | 2027-01-16 → 2026-04-27 A (-264d) | 0% → 100% | 7d → none |
| 2 | **Pipe Work** | 2027-01-17 → 2026-04-28 (-264d) | 2027-05-04 → 2026-09-07 (-239d) |  |  |
| CON-LEG101-OBA-1350 | Excavation for Public Water Utility Distribution Piping [Outside Boundary Area ] 1800 - 2780 m | 2027-01-17 → 2026-04-28 A (-264d) | 2027-02-02 → 2026-09-01 A (-154d) | 0% → 100% | 7d → none |
| CON-LEG101-OBA-1360 | Granular bedding for Public Water Utility Distribution Piping [Outside Boundary Area ] 1800 - 2780 m | 2027-02-03 → 2026-06-27 A (-221d) | 2027-02-23 → 2026-09-01 A (-175d) | 0% → 100% | 7d → none |
| CON-LEG101-OBA-1370 | Installation of Pipe for Public Water Utility Distribution Piping [Outside Boundary Area ] 1800 - 2780 m | 2027-02-24 → 2026-06-30 A (-239d) | 2027-03-20 → 2026-09-02 A (-199d) | 0% → 100% | 7d → none |
| CON-LEG101-OBA-1390 | Granular Surround for Public Water Utility Distribution Piping [Outside Boundary Area ] 1800 - 2780 m | 2027-04-05 → 2026-07-02 A (-277d) | 2027-04-19 → 2026-09-02 A (-229d) | 0% → 100% | 7d → none |
| CON-LEG101-OBA-1400 | Installation of Micron Marker Magnetic Tape [Outside Boundary Area ] 1800 - 2780 m | 2027-04-20 → 2026-07-04 A (-290d) | 2027-04-22 → 2026-09-03 A (-231d) | 0% → 100% | 7d → none |
| CON-LEG101-OBA-1410 | Backfilling to Subgrade Elevation [Outside Boundary Area ] 1800 - 2780 m | 2027-04-24 → 2026-07-05 A (-293d) | 2027-05-04 → 2026-09-03 A (-243d) | 0% → 100% | 7d → none |
| CON-LEG101-OBA-1380 | Testing for Public Water Utility Distribution Piping [Outside Boundary Area ] 1800 - 2780 m | 2027-03-21 → 2026-09-07 A (-195d) | 2027-04-04 → 2026-09-07 A (-209d) | 0% → 100% | 7d → none |
| 8 | **Roads Finishing** | 2027-01-25 → 2026-05-06 (-264d) | 2027-08-03 → 2027-11-24 (+113d) |  |  |
| 1 | **Local – 01** | 2027-02-20 → 2026-05-06 (-290d) | 2027-07-20 → 2027-10-30 (+102d) |  |  |
| 1 | **LOCAL - 01 Segment-01 (From 0+000 to 1+066)** | 2027-02-20 → 2026-05-06 (-290d) | 2027-05-30 → 2027-10-07 (+130d) |  |  |
| 7 | **Concrete Curb** | 2027-02-20 → 2026-05-06 (-290d) | 2027-03-13 → 2027-07-18 (+127d) |  |  |
| CON-LEG101-LR-6180 | Installation of Precast Concrete Curb [Local – 01 Segment-01] | 2027-02-20 → 2026-05-06 A (-290d) | 2027-03-13 → 2027-07-18 (+127d) | 0% → 85% | 6d → -96.2d |
| 1 | **Asphalt Wearing Course** | 2027-03-14 → 2026-09-29 (-166d) | 2027-03-27 → 2027-07-25 (+120d) |  |  |
| CON-LEG101-LR-5980 | Tack coat (RC2) [Local – 01 Segment-01] | 2027-03-14 → 2026-09-29 A (-166d) | 2027-03-20 → 2027-07-21 (+123d) | 0% → 45% | 12d → -44.5d |
| CON-LEG101-LR-6080 | Bituminous wearing course [Local – 01 Segment-01] | 2027-03-21 → 2026-09-29 A (-173d) | 2027-03-27 → 2027-07-25 (+120d) | 0% → 45% | 12d → -44.5d |
| 3 | **Interlocking block roads/on-street parking** | 2027-03-28 → 2026-06-13 (-288d) | 2027-04-18 → 2027-09-28 (+163d) |  |  |
| CON-LEG101-LR-6380 | Interlocking block pavers for roads/on-street parking [Local – 01 Segment-01] | 2027-03-28 → 2026-06-13 A (-288d) | 2027-04-18 → 2027-09-28 (+163d) | 0% → 60% | 12d → -37.6d |
| 4 | **Interlocking block sidewalk/footpath** | 2027-04-19 → 2026-06-26 (-297d) | 2027-05-10 → 2027-10-07 (+150d) |  |  |
| CON-LEG101-LR-6280 | Interlocking block pavers for sidewalk/footpath [Local – 01 Segment-01] | 2027-04-19 → 2026-06-26 A (-297d) | 2027-05-10 → 2027-10-07 (+150d) | 0% → 60% | 12d → -37.6d |
| 5 | **Pavement Markings** | 2027-04-05 → 2027-08-09 (+126d) | 2027-04-22 → 2027-08-28 (+128d) |  |  |
| CON-LEG101-LR-6580 | Pavement Markings (White Paint/Yellow Paint) [Local – 01 Segment-01] | 2027-04-05 → 2027-08-09 (+126d) | 2027-04-11 → 2027-08-16 (+127d) |  | 14d → -56.9d |
| CON-LEG101-LR-6680 | Handicap ramp [Local – 01 Segment-01] | 2027-04-12 → 2027-08-16 (+126d) | 2027-04-22 → 2027-08-28 (+128d) |  | 14d → -51.9d |
| 6 | **Traffic Signs** | 2027-04-24 → 2026-07-05 (-293d) | 2027-05-30 → 2027-09-15 (+108d) |  |  |
| CON-LEG101-LR-6780 | Installation of Traffic Signs [Local – 01 Segment-01] | 2027-05-04 → 2026-07-05 A (-303d) | 2027-05-30 → 2027-09-15 (+108d) | 0% → 60% | 14d → -31.75d |
| CON-LEG101-LR-6480 | Retroreflective Plastic Cones [Local – 01 Segment-01] | 2027-04-24 → 2027-08-28 (+126d) | 2027-05-03 → 2027-09-07 (+127d) |  | 14d → -50.9d |
| 2 | **LOCAL - 01 Segment-02 (From 1+066 to 2+133)** | 2027-03-14 → 2026-05-12 (-306d) | 2027-06-23 → 2027-10-05 (+104d) |  |  |
| 7 | **Concrete Curb** | 2027-03-14 → 2026-05-12 (-306d) | 2027-04-05 → 2026-06-21 (-288d) |  |  |
| CON-LEG101-LR-6190 | Installation of Precast Concrete Curb [Local – 01 Segment-02] | 2027-03-14 → 2026-05-12 A (-306d) | 2027-04-05 → 2026-06-21 A (-288d) | 0% → 100% | 6d → none |
| 1 | **Asphalt Wearing Course** | 2027-04-06 → 2026-09-29 (-189d) | 2027-04-19 → 2027-07-29 (+101d) |  |  |
| CON-LEG101-LR-5990 | Tack coat (RC2) [Local – 01 Segment-02] | 2027-04-06 → 2026-09-29 A (-189d) | 2027-04-12 → 2027-07-27 (+106d) | 0% → 70% | 15d → -43.3d |
| CON-LEG101-LR-6090 | Bituminous wearing course [Local – 01 Segment-02] | 2027-04-13 → 2026-09-29 A (-196d) | 2027-04-19 → 2027-07-29 (+101d) | 0% → 70% | 15d → -43.3d |
| 3 | **Interlocking block roads/on-street parking** | 2027-05-11 → 2026-07-01 (-314d) | 2027-05-26 → 2026-07-20 (-310d) |  |  |
| CON-LEG101-LR-6390 | Interlocking block pavers for roads/on-street parking [Local – 01 Segment-02] | 2027-05-11 → 2026-07-01 A (-314d) | 2027-05-26 → 2026-07-20 A (-310d) | 0% → 100% | 12d → none |
| 4 | **Interlocking block sidewalk/footpath** | 2027-05-27 → 2026-07-01 (-330d) | 2027-06-07 → 2026-07-20 (-322d) |  |  |
| CON-LEG101-LR-6290 | Interlocking block pavers for sidewalk/footpath [Local – 01 Segment-02] | 2027-05-27 → 2026-07-01 A (-330d) | 2027-06-07 → 2026-07-20 A (-322d) | 0% → 100% | 12d → none |
| 5 | **Pavement Markings** | 2027-04-12 → 2027-08-16 (+126d) | 2027-05-10 → 2027-09-14 (+127d) |  |  |
| CON-LEG101-LR-6590 | Pavement Markings (White Paint/Yellow Paint) [Local – 01 Segment-02] | 2027-04-12 → 2027-08-16 (+126d) | 2027-04-28 → 2027-09-02 (+127d) |  | 15d → -56.9d |
| CON-LEG101-LR-6690 | Handicap ramp [Local – 01 Segment-02] | 2027-04-29 → 2027-09-02 (+126d) | 2027-05-10 → 2027-09-14 (+127d) |  | 15d → -56.9d |
| 6 | **Traffic Signs** | 2027-05-11 → 2026-07-06 (-309d) | 2027-06-23 → 2027-10-05 (+104d) |  |  |
| CON-LEG101-LR-6790 | Installation of Traffic Signs [Local – 01 Segment-02] | 2027-05-31 → 2026-07-06 A (-329d) | 2027-06-23 → 2027-10-05 (+104d) | 0% → 75% | 14d → -42.15d |
| CON-LEG101-LR-6490 | Retroreflective Plastic Cones [Local – 01 Segment-02] | 2027-05-11 → 2027-09-14 (+126d) | 2027-05-29 → 2027-09-29 (+123d) |  | 15d → -56.9d |
| 3 | **LOCAL - 01 Segment-03 (From 2+133 to 3+200)** | 2027-04-06 → 2026-07-11 (-269d) | 2027-07-20 → 2027-10-30 (+102d) |  |  |
| 7 | **Concrete Curb** | 2027-04-06 → 2026-07-21 (-259d) | 2027-04-29 → 2026-09-16 (-225d) |  |  |
| CON-LEG101-LR-6200 | Installation of Precast Concrete Curb [Local – 01 Segment-03] | 2027-04-06 → 2026-07-21 A (-259d) | 2027-04-29 → 2026-09-16 A (-225d) | 0% → 100% | 6d → none |
| 1 | **Asphalt Wearing Course** | 2027-05-01 → 2027-07-29 (+89d) | 2027-05-09 → 2027-08-08 (+91d) |  |  |
| CON-LEG101-LR-6000 | Tack coat (RC2) [Local – 01 Segment-03] | 2027-05-01 → 2027-07-29 (+89d) | 2027-05-04 → 2027-08-03 (+91d) |  | 6d → -43.3d |
| CON-LEG101-LR-6100 | Bituminous wearing course [Local – 01 Segment-03] | 2027-05-05 → 2027-08-03 (+90d) | 2027-05-09 → 2027-08-08 (+91d) |  | 6d → -43.3d |
| 3 | **Interlocking block roads/on-street parking** | 2027-06-08 → 2026-08-22 (-290d) | 2027-06-28 → 2026-09-19 (-282d) |  |  |
| CON-LEG101-LR-6400 | Interlocking block pavers for roads/on-street parking [Local – 01 Segment-03] | 2027-06-08 → 2026-08-22 A (-290d) | 2027-06-28 → 2026-09-19 A (-282d) | 0% → 100% | 12d → none |
| 4 | **Interlocking block sidewalk/footpath** | 2027-06-29 → 2026-08-22 (-311d) | 2027-07-20 → 2026-09-20 (-303d) |  |  |

| ID | Task | Start | Finish | Complete | Total float |
| --- | --- | --- | --- | --- | --- |
| CON-LEG101-LR-6300 | Interlocking block pavers for sidewalk/footpath [Local – 01 Segment-03] | 2027-06-29 → 2026-08-22 A (-311d) | 2027-07-20 → 2026-09-20 A (-303d) | 0% → 100% | 12d → none |
| 5 | **Pavement Markings** | 2027-05-01 → 2027-09-02 (+124d) | 2027-05-30 → 2027-09-29 (+122d) |  |  |
| CON-LEG101-LR-6600 | Pavement Markings (White Paint/Yellow Paint) [Local – 01 Segment-03] | 2027-05-01 → 2027-09-02 (+124d) | 2027-05-11 → 2027-09-14 (+126d) |  | 15d → -56.9d |
| CON-LEG101-LR-6700 | Handicap ramp [Local – 01 Segment-03] | 2027-05-12 → 2027-09-14 (+125d) | 2027-05-30 → 2027-09-29 (+122d) |  | 15d → -56.9d |
| 6 | **Traffic Signs** | 2027-05-31 → 2026-07-11 (-324d) | 2027-07-18 → 2027-10-30 (+104d) |  |  |
| CON-LEG101-LR-6800 | Installation of Traffic Signs [Local – 01 Segment-03] | 2027-06-24 → 2026-07-11 A (-348d) | 2027-07-18 → 2027-10-30 (+104d) | 0% → 70% | 14d → -56.9d |
| CON-LEG101-LR-6500 | Retroreflective Plastic Cones [Local – 01 Segment-03] | 2027-05-31 → 2027-09-29 (+121d) | 2027-06-22 → 2027-10-23 (+123d) |  | 15d → -56.9d |
| 2 | **Local – 02** | 2027-01-25 → 2026-06-09 (-230d) | 2027-07-14 → 2027-10-26 (+104d) |  |  |
| 7 | **Concrete Curb** | 2027-01-25 → 2026-06-09 (-230d) | 2027-02-15 → 2026-06-24 (-236d) |  |  |
| CON-LEG101-LR-6210 | Installation of Precast Concrete Curb [Local – 02 ] | 2027-01-25 → 2026-06-09 A (-230d) | 2027-02-15 → 2026-06-24 A (-236d) | 0% → 100% | 0d → none |
| 1 | **Asphalt Wearing Course** | 2027-05-10 → 2026-10-04 (-218d) | 2027-05-19 → 2027-08-10 (+83d) |  |  |
| CON-LEG101-LR-6010 | Tack coat (RC2) [Local – 02 ] | 2027-05-10 → 2026-10-04 A (-218d) | 2027-05-11 → 2027-08-09 (+90d) | 0% → 50% | 6d → -43.3d |
| CON-LEG101-LR-6110 | Bituminous wearing course [Local – 02 ] | 2027-05-12 → 2026-10-04 A (-220d) | 2027-05-19 → 2027-08-10 (+83d) | 0% → 50% | 6d → -43.3d |
| 3 | **Interlocking block roads/on-street parking** | 2027-05-20 → 2026-07-18 (-306d) | 2027-06-13 → 2026-07-28 (-320d) |  |  |
| CON-LEG101-LR-6410 | Interlocking block pavers for roads/on-street parking [Local – 02 ] | 2027-05-20 → 2026-07-18 A (-306d) | 2027-06-13 → 2026-07-28 A (-320d) | 0% → 100% | 23d → none |
| 4 | **Interlocking block sidewalk/footpath** | 2027-06-14 → 2026-07-18 (-331d) | 2027-07-07 → 2026-07-28 (-344d) |  |  |
| CON-LEG101-LR-6310 | Interlocking block pavers for sidewalk/footpath [Local – 02 ] | 2027-06-14 → 2026-07-18 A (-331d) | 2027-07-07 → 2026-07-28 A (-344d) | 0% → 100% | 23d → none |
| 5 | **Pavement Markings** | 2027-05-12 → 2027-09-14 (+125d) | 2027-06-08 → 2027-10-09 (+123d) |  |  |
| CON-LEG101-LR-6610 | Pavement Markings (White Paint/Yellow Paint) [Local – 02 ] | 2027-05-12 → 2027-09-14 (+125d) | 2027-05-27 → 2027-09-27 (+123d) |  | 17d → -53.85d |
| CON-LEG101-LR-6710 | Handicap ramp [Local – 02 ] | 2027-05-29 → 2027-09-27 (+121d) | 2027-06-08 → 2027-10-09 (+123d) |  | 17d → -53.85d |
| 6 | **Traffic Signs** | 2027-06-09 → 2026-07-07 (-337d) | 2027-07-14 → 2027-10-26 (+104d) |  |  |
| CON-LEG101-LR-6810 | Installation of Traffic Signs [Local – 02 ] | 2027-06-21 → 2026-07-07 A (-349d) | 2027-07-14 → 2027-10-26 (+104d) | 0% → 75% | 17d → -53.85d |
| CON-LEG101-LR-6510 | Retroreflective Plastic Cones [Local – 02 ] | 2027-06-09 → 2027-10-09 (+122d) | 2027-06-20 → 2027-10-20 (+122d) |  | 17d → -53.85d |
| 3 | **Local – 03** | 2027-02-16 → 2026-07-08 (-223d) | 2027-07-22 → 2027-10-07 (+77d) |  |  |
| 7 | **Concrete Curb** | 2027-02-16 → 2026-10-04 (-135d) | 2027-03-13 → 2027-07-31 (+140d) |  |  |
| CON-LEG101-LR-6220 | Installation of Precast Concrete Curb [Local – 03 ] | 2027-02-16 → 2026-10-04 A (-135d) | 2027-03-13 → 2027-07-31 (+140d) | 0% → 40% | 0d → -115.6d |
| 1 | **Asphalt Wearing Course** | 2027-05-20 → 2027-08-10 (+82d) | 2027-05-25 → 2027-08-16 (+83d) |  |  |
| CON-LEG101-LR-6020 | Tack coat (RC2) [Local – 03 ] | 2027-05-20 → 2027-08-10 (+82d) | 2027-05-22 → 2027-08-12 (+82d) |  | 6d → -43.3d |
| CON-LEG101-LR-6120 | Bituminous wearing course [Local – 03 ] | 2027-05-23 → 2027-08-12 (+81d) | 2027-05-25 → 2027-08-16 (+83d) |  | 6d → -43.3d |
| 3 | **Interlocking block roads/on-street parking** | 2027-05-26 → 2027-08-16 (+82d) | 2027-06-19 → 2027-09-09 (+82d) |  |  |
| CON-LEG101-LR-6420 | Interlocking block pavers for roads/on-street parking [Local – 03 ] | 2027-05-26 → 2027-08-16 (+82d) | 2027-06-19 → 2027-09-09 (+82d) |  | 18d → -36.3d |
| 4 | **Interlocking block sidewalk/footpath** | 2027-06-20 → 2027-09-09 (+81d) | 2027-07-13 → 2027-10-05 (+84d) |  |  |
| CON-LEG101-LR-6320 | Interlocking block pavers for sidewalk/footpath [Local – 03 ] | 2027-06-20 → 2027-09-09 (+81d) | 2027-07-13 → 2027-10-05 (+84d) |  | 18d → -36.3d |
| 5 | **Pavement Markings** | 2027-05-26 → 2027-08-16 (+82d) | 2027-06-17 → 2027-09-08 (+83d) |  |  |
| CON-LEG101-LR-6620 | Pavement Markings (White Paint/Yellow Paint) [Local – 03 ] | 2027-05-26 → 2027-08-16 (+82d) | 2027-06-06 → 2027-08-28 (+83d) |  | 10d → -38.3d |
| CON-LEG101-LR-6720 | Handicap ramp [Local – 03 ] | 2027-06-07 → 2027-08-28 (+82d) | 2027-06-17 → 2027-09-08 (+83d) |  | 10d → -38.3d |
| 6 | **Traffic Signs** | 2027-06-19 → 2026-07-08 (-346d) | 2027-07-22 → 2027-10-07 (+77d) |  |  |
| CON-LEG101-LR-6820 | Installation of Traffic Signs [Local – 03 ] | 2027-06-30 → 2026-07-08 A (-357d) | 2027-07-22 → 2027-10-07 (+77d) | 0% → 30% | 10d → -38.3d |
| CON-LEG101-LR-6520 | Retroreflective Plastic Cones [Local – 03 ] | 2027-06-19 → 2027-09-08 (+81d) | 2027-06-29 → 2027-09-20 (+83d) |  | 10d → -38.3d |
| 4 | **Local – 04** | 2027-03-14 → 2027-09-04 (+174d) | 2027-07-21 → 2027-11-24 (+126d) |  |  |
| 7 | **Concrete Curb** | 2027-03-14 → 2027-09-04 (+174d) | 2027-04-06 → 2027-09-28 (+175d) |  |  |
| CON-LEG101-LR-6230 | Installation of Precast Concrete Curb [Local – 04 ] | 2027-03-14 → 2027-09-04 (+174d) | 2027-04-06 → 2027-09-28 (+175d) |  | 0d → -145d |
| 1 | **Asphalt Wearing Course** | 2027-05-26 → 2027-09-29 (+126d) | 2027-05-31 → 2027-10-04 (+126d) |  |  |
| CON-LEG101-LR-6030 | Tack coat (RC2) [Local – 04 ] | 2027-05-26 → 2027-09-29 (+126d) | 2027-05-27 → 2027-09-30 (+126d) |  | 6d → -79.4d |
| CON-LEG101-LR-6130 | Bituminous wearing course [Local – 04 ] | 2027-05-29 → 2027-10-02 (+126d) | 2027-05-31 → 2027-10-04 (+126d) |  | 6d → -79.4d |
| 3 | **Interlocking block roads/on-street parking** | 2027-06-01 → 2027-10-05 (+126d) | 2027-06-22 → 2027-10-26 (+126d) |  |  |
| CON-LEG101-LR-6430 | Interlocking block pavers for roads/on-street parking [Local – 04 ] | 2027-06-01 → 2027-10-05 (+126d) | 2027-06-22 → 2027-10-26 (+126d) |  | 17d → -73.4d |
| 4 | **Interlocking block sidewalk/footpath** | 2027-06-23 → 2027-10-27 (+126d) | 2027-07-14 → 2027-11-17 (+126d) |  |  |
| CON-LEG101-LR-6330 | Interlocking block pavers for sidewalk/footpath [Local – 04 ] | 2027-06-23 → 2027-10-27 (+126d) | 2027-07-14 → 2027-11-17 (+126d) |  | 17d → -73.4d |
| 5 | **Pavement Markings** | 2027-06-01 → 2027-10-05 (+126d) | 2027-06-23 → 2027-10-27 (+126d) |  |  |
| CON-LEG101-LR-6630 | Pavement Markings (White Paint/Yellow Paint) [Local – 04 ] | 2027-06-01 → 2027-10-05 (+126d) | 2027-06-12 → 2027-10-16 (+126d) |  | 11d → -79.4d |
| CON-LEG101-LR-6730 | Handicap ramp [Local – 04 ] | 2027-06-13 → 2027-10-17 (+126d) | 2027-06-23 → 2027-10-27 (+126d) |  | 11d → -79.4d |
| 6 | **Traffic Signs** | 2027-06-24 → 2027-10-28 (+126d) | 2027-07-21 → 2027-11-24 (+126d) |  |  |
| CON-LEG101-LR-6530 | Retroreflective Plastic Cones [Local – 04 ] | 2027-06-24 → 2027-10-28 (+126d) | 2027-07-05 → 2027-11-08 (+126d) |  | 11d → -79.4d |
| CON-LEG101-LR-6830 | Installation of Traffic Signs [Local – 04 ] | 2027-07-06 → 2027-11-09 (+126d) | 2027-07-21 → 2027-11-24 (+126d) |  | 11d → -79.4d |
| 5 | **Local – 05** | 2027-04-07 → 2026-05-24 (-318d) | 2027-07-19 → 2027-11-08 (+112d) |  |  |
| 7 | **Concrete Curb** | 2027-04-07 → 2026-05-24 (-318d) | 2027-04-25 → 2026-06-28 (-301d) |  |  |
| CON-LEG101-LR-6240 | Installation of Precast Concrete Curb [Local – 05 ] | 2027-04-07 → 2026-05-24 A (-318d) | 2027-04-25 → 2026-06-28 A (-301d) | 0% → 100% | 0d → none |
| 1 | **Asphalt Wearing Course** | 2027-06-01 → 2026-10-03 (-241d) | 2027-06-06 → 2027-10-06 (+122d) |  |  |
| CON-LEG101-LR-6040 | Tack coat (RC2) [Local – 05 ] | 2027-06-01 → 2026-10-03 A (-241d) | 2027-06-02 → 2027-10-05 (+125d) | 0% → 60% | 6d → -70.15d |
| CON-LEG101-LR-6140 | Bituminous wearing course [Local – 05 ] | 2027-06-03 → 2026-10-03 A (-243d) | 2027-06-06 → 2027-10-06 (+122d) | 0% → 60% | 6d → -70.15d |
| 3 | **Interlocking block roads/on-street parking** | 2027-06-07 → 2026-07-13 (-329d) | 2027-06-27 → 2026-07-29 (-333d) |  |  |
| CON-LEG101-LR-6440 | Interlocking block pavers for roads/on-street parking [Local – 05 ] | 2027-06-07 → 2026-07-13 A (-329d) | 2027-06-27 → 2026-07-29 A (-333d) | 0% → 100% | 13d → none |
| 4 | **Interlocking block sidewalk/footpath** | 2027-06-28 → 2026-07-13 (-350d) | 2027-07-19 → 2026-07-29 (-355d) |  |  |
| CON-LEG101-LR-6340 | Interlocking block pavers for sidewalk/footpath [Local – 05 ] | 2027-06-28 → 2026-07-13 A (-350d) | 2027-07-19 → 2026-07-29 A (-355d) | 0% → 100% | 13d → none |
| 5 | **Pavement Markings** | 2027-06-07 → 2027-10-07 (+122d) | 2027-06-29 → 2027-10-30 (+123d) |  |  |
| CON-LEG101-LR-6640 | Pavement Markings (White Paint/Yellow Paint) [Local – 05 ] | 2027-06-07 → 2027-10-07 (+122d) | 2027-06-17 → 2027-10-18 (+123d) |  | 14d → -65.15d |
| CON-LEG101-LR-6740 | Handicap ramp [Local – 05 ] | 2027-06-19 → 2027-10-19 (+122d) | 2027-06-29 → 2027-10-30 (+123d) |  | 14d → -65.15d |
| 6 | **Traffic Signs** | 2027-06-30 → 2026-07-09 (-356d) | 2027-07-18 → 2027-11-08 (+113d) |  |  |
| CON-LEG101-LR-6840 | Installation of Traffic Signs [Local – 05 ] | 2027-07-06 → 2026-07-09 A (-362d) | 2027-07-18 → 2027-11-08 (+113d) | 0% → 75% | 14d → -65.15d |

| ID | Task | Start | Finish | Complete | Total float |
| --- | --- | --- | --- | --- | --- |
| CON-LEG101-LR-6540 | Retroreflective Plastic Cones [Local – 05 ] | 2027-06-30 → 2027-10-31 (+123d) | 2027-07-05 → 2027-11-04 (+122d) |  | 14d → -65.15d |
| 6 | **Local – 06** | 2027-04-26 → 2026-06-10 (-320d) | 2027-07-27 → 2027-11-14 (+110d) |  |  |
| 7 | **Concrete Curb** | 2027-04-26 → 2026-06-10 (-320d) | 2027-05-24 → 2026-07-15 (-313d) |  |  |
| CON-LEG101-LR-6250 | Installation of Precast Concrete Curb [Local – 06 ] | 2027-04-26 → 2026-06-10 A (-320d) | 2027-05-24 → 2026-07-15 A (-313d) | 0% → 100% | 0d → none |
| 1 | **Asphalt Wearing Course** | 2027-06-07 → 2027-10-07 (+122d) | 2027-06-12 → 2027-10-12 (+122d) |  |  |
| CON-LEG101-LR-6050 | Tack coat (RC2) [Local – 06 ] | 2027-06-07 → 2027-10-07 (+122d) | 2027-06-09 → 2027-10-10 (+123d) |  | 6d → -70.15d |
| CON-LEG101-LR-6150 | Bituminous wearing course [Local – 06 ] | 2027-06-10 → 2027-10-11 (+123d) | 2027-06-12 → 2027-10-12 (+122d) |  | 6d → -70.15d |
| 3 | **Interlocking block roads/on-street parking** | 2027-06-13 → 2026-07-19 (-329d) | 2027-07-04 → 2026-08-20 (-318d) |  |  |
| CON-LEG101-LR-6450 | Interlocking block pavers for roads/on-street parking [Local – 06 ] | 2027-06-13 → 2026-07-19 A (-329d) | 2027-07-04 → 2026-08-20 A (-318d) | 0% → 100% | 7d → none |
| 4 | **Interlocking block sidewalk/footpath** | 2027-07-05 → 2026-07-19 (-351d) | 2027-07-26 → 2026-08-20 (-340d) |  |  |
| CON-LEG101-LR-6350 | Interlocking block pavers for sidewalk/footpath [Local – 06 ] | 2027-07-05 → 2026-07-19 A (-351d) | 2027-07-26 → 2026-08-20 A (-340d) | 0% → 100% | 7d → none |
| 5 | **Pavement Markings** | 2027-06-13 → 2027-10-13 (+122d) | 2027-07-05 → 2027-11-04 (+122d) |  |  |
| CON-LEG101-LR-6650 | Pavement Markings (White Paint/Yellow Paint) [Local – 06 ] | 2027-06-13 → 2027-10-13 (+122d) | 2027-06-23 → 2027-10-24 (+123d) |  | 6d → -70.15d |
| CON-LEG101-LR-6750 | Handicap ramp [Local – 06 ] | 2027-06-24 → 2027-10-25 (+123d) | 2027-07-05 → 2027-11-04 (+122d) |  | 6d → -70.15d |
| 6 | **Traffic Signs** | 2027-07-06 → 2026-07-11 (-360d) | 2027-07-27 → 2027-11-14 (+110d) |  |  |
| CON-LEG101-LR-6850 | Installation of Traffic Signs [Local – 06 ] | 2027-07-11 → 2026-07-11 A (-365d) | 2027-07-27 → 2027-11-14 (+110d) | 0% → 75% | 6d → -70.15d |
| CON-LEG101-LR-6550 | Retroreflective Plastic Cones [Local – 06 ] | 2027-07-06 → 2027-11-06 (+123d) | 2027-07-10 → 2027-11-09 (+122d) |  | 6d → -70.15d |
| 7 | **Local – 07** | 2027-05-25 → 2026-07-05 (-324d) | 2027-07-21 → 2027-10-18 (+89d) |  |  |
| 7 | **Concrete Curb** | 2027-05-25 → 2026-07-05 (-324d) | 2027-06-02 → 2026-07-20 (-317d) |  |  |
| CON-LEG101-LR-6260 | Installation of Precast Concrete Curb [Local – 07 ] | 2027-05-25 → 2026-07-05 A (-324d) | 2027-06-02 → 2026-07-20 A (-317d) | 0% → 100% | 0d → none |
| 1 | **Asphalt Wearing Course** | 2027-06-03 → 2026-10-01 (-245d) | 2027-06-16 → 2027-09-30 (+106d) |  |  |
| CON-LEG101-LR-6060 | Tack coat (RC2) [Local – 07 ] | 2027-06-03 → 2026-10-01 A (-245d) | 2027-06-09 → 2027-09-29 (+112d) | 0% → 90% | 11d → -47.1d |
| CON-LEG101-LR-6160 | Bituminous wearing course [Local – 07 ] | 2027-06-10 → 2026-10-01 A (-252d) | 2027-06-16 → 2027-09-30 (+106d) | 0% → 90% | 11d → -47.1d |
| 3 | **Interlocking block roads/on-street parking** | 2027-06-17 → 2026-07-23 (-329d) | 2027-07-04 → 2026-08-02 (-336d) |  |  |
| CON-LEG101-LR-6460 | Interlocking block pavers for roads/on-street parking [Local – 07 ] | 2027-06-17 → 2026-07-23 A (-329d) | 2027-07-04 → 2026-08-02 A (-336d) | 0% → 100% | 11d → none |
| 4 | **Interlocking block sidewalk/footpath** | 2027-07-05 → 2026-07-23 (-347d) | 2027-07-21 → 2026-08-02 (-353d) |  |  |
| CON-LEG101-LR-6360 | Interlocking block pavers for sidewalk/footpath [Local – 07 ] | 2027-07-05 → 2026-07-23 A (-347d) | 2027-07-21 → 2026-08-02 A (-353d) | 0% → 100% | 11d → none |
| 5 | **Pavement Markings** | 2027-06-17 → 2027-09-30 (+105d) | 2027-06-26 → 2027-10-10 (+106d) |  |  |
| CON-LEG101-LR-6660 | Pavement Markings (White Paint/Yellow Paint) [Local – 07 ] | 2027-06-17 → 2027-09-30 (+105d) | 2027-06-21 → 2027-10-05 (+106d) |  | 15d → -47.1d |
| CON-LEG101-LR-6760 | Handicap ramp [Local – 07 ] | 2027-06-22 → 2027-10-05 (+105d) | 2027-06-26 → 2027-10-10 (+106d) |  | 15d → -47.1d |
| 6 | **Traffic Signs** | 2027-06-27 → 2026-07-12 (-350d) | 2027-07-17 → 2027-10-18 (+93d) |  |  |
| CON-LEG101-LR-6860 | Installation of Traffic Signs [Local – 07 ] | 2027-07-01 → 2026-07-12 A (-354d) | 2027-07-17 → 2027-10-18 (+93d) | 0% → 75% | 15d → -47.1d |
| CON-LEG101-LR-6560 | Retroreflective Plastic Cones [Local – 07 ] | 2027-06-27 → 2027-10-10 (+105d) | 2027-06-30 → 2027-10-14 (+106d) |  | 15d → -47.1d |
| 8 | **Local – 08** | 2027-06-03 → 2026-07-13 (-325d) | 2027-08-03 → 2027-10-25 (+83d) |  |  |
| 7 | **Concrete Curb** | 2027-06-03 → 2026-07-23 (-315d) | 2027-06-19 → 2026-09-03 (-289d) |  |  |
| CON-LEG101-LR-6270 | Installation of Precast Concrete Curb [Local – 08 ] | 2027-06-03 → 2026-07-23 A (-315d) | 2027-06-19 → 2026-09-03 A (-289d) | 0% → 100% | 0d → none |
| 1 | **Asphalt Wearing Course** | 2027-06-20 → 2027-09-29 (+101d) | 2027-06-24 → 2027-10-04 (+102d) |  |  |
| CON-LEG101-LR-6070 | Tack coat (RC2) [Local – 08 ] | 2027-06-20 → 2027-09-29 (+101d) | 2027-06-21 → 2027-09-30 (+101d) |  | 0d → -53d |
| CON-LEG101-LR-6170 | Bituminous wearing course [Local – 08 ] | 2027-06-22 → 2027-10-02 (+102d) | 2027-06-24 → 2027-10-04 (+102d) |  | 0d → -53d |
| 3 | **Interlocking block roads/on-street parking** | 2027-06-26 → 2026-09-12 (-287d) | 2027-07-10 → 2026-09-16 (-297d) |  |  |
| CON-LEG101-LR-6470 | Interlocking block pavers for roads/on-street parking [Local – 08 ] | 2027-06-26 → 2026-09-12 A (-287d) | 2027-07-10 → 2026-09-16 A (-297d) | 0% → 100% | 0d → none |
| 4 | **Interlocking block sidewalk/footpath** | 2027-07-11 → 2026-09-13 (-301d) | 2027-08-03 → 2026-09-17 (-320d) |  |  |
| CON-LEG101-LR-6370 | Interlocking block pavers for sidewalk/footpath [Local – 08 ] | 2027-07-11 → 2026-09-13 A (-301d) | 2027-08-03 → 2026-09-17 A (-320d) | 0% → 100% | 0d → none |
| 5 | **Pavement Markings** | 2027-06-26 → 2027-10-05 (+101d) | 2027-07-04 → 2027-10-13 (+101d) |  |  |
| CON-LEG101-LR-6670 | Pavement Markings (White Paint/Yellow Paint) [Local – 08 ] | 2027-06-26 → 2027-10-05 (+101d) | 2027-06-29 → 2027-10-09 (+102d) |  | 8d → -53d |
| CON-LEG101-LR-6770 | Handicap ramp [Local – 08 ] | 2027-06-30 → 2027-10-10 (+102d) | 2027-07-04 → 2027-10-13 (+101d) |  | 8d → -53d |
| 6 | **Traffic Signs** | 2027-07-05 → 2026-07-13 (-357d) | 2027-07-25 → 2027-10-25 (+92d) |  |  |
| CON-LEG101-LR-6870 | Installation of Traffic Signs [Local – 08 ] | 2027-07-10 → 2026-07-13 A (-362d) | 2027-07-25 → 2027-10-25 (+92d) | 0% → 60% | 8d → -53d |
| CON-LEG101-LR-6570 | Retroreflective Plastic Cones [Local – 08 ] | 2027-07-05 → 2027-10-14 (+101d) | 2027-07-08 → 2027-10-18 (+102d) |  | 8d → -53d |
| 5 | **Fence and Gate** | 2026-02-07 → 2025-12-10 (-59d) | 2027-10-18 → 2027-11-20 (+33d) |  |  |
| 1 | **Fence and Gate Segment -01 (From 0+000 to 0+671)** | 2026-02-07 → 2025-12-10 (-59d) | 2026-06-22 → 2027-01-31 (+223d) |  |  |
| 1 | **Fence** | 2026-02-07 → 2025-12-10 (-59d) | 2026-06-22 → 2027-01-31 (+223d) |  |  |
| CON-LEG101-FG-1000 | Excavation for Fences [Fence and Gate Segment -01] | 2026-02-07 → 2025-12-10 A (-59d) | 2026-02-17 → 2026-10-11 (+236d) | 0% → 85% | 0d → 34.48d |
| CON-LEG101-FG-1100 | Lean concrete for Foundation [Fence and Gate Segment -01] | 2026-02-18 → 2025-12-21 A (-59d) | 2026-02-23 → 2026-10-15 (+234d) | 0% → 20% | 0d → 34.48d |
| CON-LEG101-FG-1150 | Reinforced concrete Structure [Fence and Gate Segment -01] | 2026-02-24 → 2025-12-23 A (-63d) | 2026-03-18 → 2026-11-05 (+232d) | 0% → 20% | 0d → 34.48d |
| CON-LEG101-FG-1200 | Spraying of bituminous paint waterproofing for R.C foundation [Fence and Gate Segment -01] | 2026-03-19 → 2026-11-05 (+231d) | 2026-04-04 → 2026-11-17 (+227d) |  | 0d → 34.48d |
| CON-LEG101-FG-1260 | Embankments to the Fences [Fence and Gate Segment -01] | 2026-04-05 → 2026-11-17 (+226d) | 2026-04-13 → 2026-11-26 (+227d) |  | 0d → 34.48d |
| CON-LEG101-FG-1050 | Concrete Works for Ground Beam for Fences [Fence and Gate Segment -01] | 2026-04-14 → 2026-11-26 (+226d) | 2026-05-06 → 2026-12-20 (+228d) |  | 0d → 34.48d |
| CON-LEG101-FG-1420 | Plster Works for Fences [Fence and Gate Segment -01] | 2026-05-07 → 2026-12-20 (+227d) | 2026-05-20 → 2027-01-03 (+228d) |  | 0d → 34.48d |
| CON-LEG101-FG-1280 | Installation of Metal Fence [Fence and Gate Segment -01] | 2026-05-21 → 2027-01-03 (+227d) | 2026-06-10 → 2027-01-19 (+223d) |  | 0d → 34.48d |
| CON-LEG101-FG-1340 | Paint On Cement Plaster [Fence and Gate Segment -01] | 2026-06-11 → 2027-01-19 (+222d) | 2026-06-22 → 2027-01-31 (+223d) |  | 0d → 34.48d |
| 2 | **Fence and Gate Segment -02 (From 0+671 to 1+342)** | 2026-06-23 → 2026-03-25 (-90d) | 2026-10-29 → 2027-04-06 (+159d) |  |  |
| 1 | **Fence** | 2026-06-23 → 2026-03-25 (-90d) | 2026-10-29 → 2027-04-06 (+159d) |  |  |
| CON-LEG101-FG-1010 | Excavation for Fences [Fence and Gate Segment -02] | 2026-06-23 → 2026-03-25 A (-90d) | 2026-07-04 → 2027-02-03 (+214d) | 0% → 85% | 0d → 34.48d |
| CON-LEG101-FG-1110 | Lean concrete for Foundation [Fence and Gate Segment -02] | 2026-07-05 → 2026-04-02 A (-94d) | 2026-07-08 → 2027-02-04 (+211d) | 0% → 85% | 0d → 34.48d |
| CON-LEG101-FG-1160 | Reinforced concrete Structure [Fence and Gate Segment -02] | 2026-07-09 → 2026-04-04 A (-96d) | 2026-08-01 → 2027-02-15 (+198d) | 0% → 85% | 0d → 34.48d |
| CON-LEG101-FG-1210 | Spraying of bituminous paint waterproofing for R.C foundation [Fence and Gate Segment -02] | 2026-08-02 → 2026-05-02 A (-92d) | 2026-08-12 → 2027-02-17 (+189d) | 0% → 85% | 0d → 34.48d |
| CON-LEG101-FG-1330 | Embankments to the Fences [Fence and Gate Segment -02] | 2026-08-13 → 2026-05-09 A (-96d) | 2026-08-22 → 2027-02-20 (+182d) | 0% → 85% | 0d → 34.48d |
| CON-LEG101-FG-1060 | Concrete Works for Ground Beam for Fences [Fence and Gate Segment -02] | 2026-08-23 → 2026-05-12 A (-103d) | 2026-09-14 → 2027-02-27 (+166d) | 0% → 85% | 0d → 34.48d |
| CON-LEG101-FG-1290 | Installation of Metal Fence [Fence and Gate Segment -02] | 2026-09-30 → 2026-09-02 A (-28d) | 2026-10-15 → 2027-03-23 (+159d) | 0% → 40% | 0d → 34.48d |

| ID | Task | Start | Finish | Complete | Total float | Other |
| --- | --- | --- | --- | --- | --- | --- |
| CON-LEG101-FG-1430 | Plster Works for Fences [Fence and Gate Segment -02] | 2026-09-15 → 2027-02-27 (+165d) | 2026-09-29 → 2027-03-13 (+165d) |  | 0d → 34.48d |  |
| CON-LEG101-FG-1350 | Paint On Cement Plaster [Fence and Gate Segment -02] | 2026-10-17 → 2027-03-23 (+157d) | 2026-10-29 → 2027-04-06 (+159d) |  | 0d → 34.48d |  |
| 3 | **Fence and Gate Segment -03 (From 1+342 to 2+014)** | 2026-10-31 → 2026-01-25 (-279d) | 2027-04-14 → 2027-06-07 (+54d) |  |  |  |
| 1 | **Fence** | 2026-10-31 → 2026-01-25 (-279d) | 2027-03-13 → 2027-04-26 (+44d) |  |  |  |
| CON-LEG101-FG-1020 | Excavation for Fences [Fence and Gate Segment -03] | 2026-10-31 → 2026-01-25 A (-279d) | 2026-11-10 → 2026-03-17 A (-238d) | 0% → 100% | 0d → none |  |
| CON-LEG101-FG-1120 | Lean concrete for Foundation [Fence and Gate Segment -03] | 2026-11-11 → 2026-01-31 A (-284d) | 2026-11-15 → 2026-04-20 A (-209d) | 0% → 100% | 0d → none |  |
| CON-LEG101-FG-1170 | Reinforced concrete Structure [Fence and Gate Segment -03] | 2026-11-16 → 2026-02-11 A (-278d) | 2026-12-08 → 2026-07-27 A (-134d) | 0% → 100% | 0d → none |  |
| CON-LEG101-FG-1220 | Spraying of bituminous paint waterproofing for R.C foundation [Fence and Gate Segment -03] | 2026-12-09 → 2026-02-18 A (-294d) | 2026-12-20 → 2026-08-04 A (-138d) | 0% → 100% | 0d → none |  |
| CON-LEG101-FG-1390 | Embankments to the Fences [Fence and Gate Segment -03] | 2026-12-21 → 2026-04-01 A (-264d) | 2026-12-29 → 2026-08-09 A (-142d) | 0% → 100% | 0d → none |  |
| CON-LEG101-FG-1070 | Concrete Works for Ground Beam for Fences [Fence and Gate Segment -03] | 2026-12-30 → 2026-04-11 A (-263d) | 2027-01-21 → 2026-08-20 A (-154d) | 0% → 100% | 0d → none |  |
| CON-LEG101-FG-1300 | Installation of Metal Fence [Fence and Gate Segment -03] | 2027-02-06 → 2026-05-14 A (-268d) | 2027-02-27 → 2027-04-17 (+49d) | 0% → 97% | 0d → 34.48d |  |
| CON-LEG101-FG-1440 | Plster Works for Fences [Fence and Gate Segment -03] | 2027-01-23 → 2026-08-01 A (-175d) | 2027-02-04 → 2027-04-15 (+70d) | 0% → 30% | 0d → 34.48d |  |
| CON-LEG101-FG-1360 | Paint On Cement Plaster [Fence and Gate Segment -03] | 2027-02-28 → 2026-09-19 A (-162d) | 2027-03-13 → 2027-04-26 (+44d) | 0% → 30% | 0d → 66.08d |  |
| 2 | **Gate** | 2027-02-28 → 2027-04-17 (+48d) | 2027-04-14 → 2027-06-07 (+54d) |  |  |  |
| CON-LEG101-FG-1250 | Installation of Main Entrance Motorized Gate [Fence and Gate Segment -03] | 2027-02-28 → 2027-04-17 (+48d) | 2027-03-22 → 2027-05-10 (+49d) |  | 6d → 34.48d |  |
| CON-LEG101-FG-1270 | Installation of Pedestrain Gate [Fence and Gate Segment -03] | 2027-03-23 → 2027-05-10 (+48d) | 2027-04-14 → 2027-06-07 (+54d) |  | 6d → 34.48d |  |
| 4 | **Fence and Gate Segment -04 (From 2+014 to 2+685)** | 2027-03-14 → 2025-12-25 (-444d) | 2027-07-13 → 2027-08-15 (+33d) |  |  |  |
| 1 | **Fence** | 2027-03-14 → 2025-12-25 (-444d) | 2027-07-13 → 2027-08-15 (+33d) |  |  |  |
| CON-LEG101-FG-1030 | Excavation for Fences [Fence and Gate Segment -04] | 2027-03-14 → 2025-12-25 A (-444d) | 2027-03-24 → 2026-01-27 A (-421d) | 0% → 100% | 0d → none |  |
| CON-LEG101-FG-1130 | Lean concrete for Foundation [Fence and Gate Segment -04] | 2027-03-25 → 2026-01-06 A (-443d) | 2027-03-29 → 2026-02-18 A (-404d) | 0% → 100% | 0d → none |  |
| CON-LEG101-FG-1180 | Reinforced concrete Structure [Fence and Gate Segment -04] | 2027-03-30 → 2026-01-07 A (-447d) | 2027-04-21 → 2026-04-15 A (-371d) | 0% → 100% | 0d → none |  |
| CON-LEG101-FG-1230 | Spraying of bituminous paint waterproofing for R.C foundation [Fence and Gate Segment -04] | 2027-04-22 → 2026-01-13 A (-464d) | 2027-05-03 → 2026-04-16 A (-382d) | 0% → 100% | 0d → none |  |
| CON-LEG101-FG-1080 | Concrete Works for Ground Beam for Fences [Fence and Gate Segment -04] | 2027-05-13 → 2026-01-17 A (-481d) | 2027-06-09 → 2026-06-30 A (-344d) | 0% → 100% | 0d → none |  |
| CON-LEG101-FG-1400 | Embankments to the Fences [Fence and Gate Segment -04] | 2027-05-04 → 2026-02-10 A (-448d) | 2027-05-12 → 2026-04-22 A (-385d) | 0% → 100% | 0d → none |  |
| CON-LEG101-FG-1310 | Installation of Metal Fence [Fence and Gate Segment -04] | 2027-06-22 → 2026-04-22 A (-426d) | 2027-06-29 → 2026-08-19 A (-314d) | 0% → 100% | 0d → none |  |
| CON-LEG101-FG-1370 | Paint On Cement Plaster [Fence and Gate Segment -04] | 2027-06-30 → 2026-05-11 A (-415d) | 2027-07-13 → 2027-08-15 (+33d) | 0% → 95% | 0d → -24.2d |  |
| CON-LEG101-FG-1450 | Plster Works for Fences [Fence and Gate Segment -04] | 2027-06-10 → 2026-09-01 A (-282d) | 2027-06-21 → 2027-06-07 (-14d) | 0% → 95% | 0d → 34.48d |  |
| 5 | **Fence and Gate Segment -05 (From 2+685 to 3+356)** | 2027-07-14 → 2027-08-15 (+32d) | 2027-10-18 → 2027-11-20 (+33d) |  |  |  |
| 1 | **Fence** | 2027-07-14 → 2027-08-15 (+32d) | 2027-10-18 → 2027-11-20 (+33d) |  |  |  |
| CON-LEG101-FG-1040 | Excavation for Fences [Fence and Gate Segment -05] | 2027-07-14 → 2027-08-15 (+32d) | 2027-07-25 → 2027-08-26 (+32d) |  | 0d → -24.2d |  |
| CON-LEG101-FG-1140 | Lean concrete for Foundation [Fence and Gate Segment -05] | 2027-07-26 → 2027-08-26 (+31d) | 2027-07-29 → 2027-08-31 (+33d) |  | 0d → -24.2d |  |
| CON-LEG101-FG-1190 | Reinforced concrete Structure [Fence and Gate Segment -05] | 2027-07-31 → 2027-08-31 (+31d) | 2027-08-22 → 2027-09-25 (+34d) |  | 0d → -24.2d |  |
| CON-LEG101-FG-1240 | Spraying of bituminous paint waterproofing for R.C foundation [Fence and Gate Segment -05] | 2027-08-23 → 2027-09-25 (+33d) | 2027-09-02 → 2027-10-06 (+34d) |  | 0d → -24.2d |  |
| CON-LEG101-FG-1410 | Embankments to the Fences [Fence and Gate Segment -05] | 2027-09-04 → 2027-10-06 (+32d) | 2027-09-07 → 2027-10-11 (+34d) |  | 0d → -24.2d |  |
| CON-LEG101-FG-1090 | Concrete Works for Ground Beam for Fences [Fence and Gate Segment -05] | 2027-09-08 → 2027-10-11 (+33d) | 2027-09-26 → 2027-10-28 (+32d) |  | 0d → -24.2d |  |
| CON-LEG101-FG-1460 | Plster Works for Fences [Fence and Gate Segment -05] | 2027-09-27 → 2027-10-28 (+31d) | 2027-10-03 → 2027-11-04 (+32d) |  | 0d → -24.2d |  |
| CON-LEG101-FG-1320 | Installation of Metal Fence [Fence and Gate Segment -05] | 2027-10-04 → 2027-11-04 (+31d) | 2027-10-11 → 2027-11-13 (+33d) |  | 0d → -24.2d |  |
| CON-LEG101-FG-1380 | Paint On Cement Plaster [Fence and Gate Segment -05] | 2027-10-12 → 2027-11-13 (+32d) | 2027-10-18 → 2027-11-20 (+33d) |  | 0d → -24.2d |  |
| 2 | **Roundabout & Landscape** | 2027-03-14 → 2027-07-18 (+126d) | 2027-10-18 → 2028-04-04 (+169d) |  |  |  |
| 10 | **Local – 01** | 2027-03-14 → 2027-07-18 (+126d) | 2027-10-10 → 2028-01-31 (+113d) |  |  |  |
| 1 | **LOCAL - 01 Segment-01 (From 0+000 to 1+066)** | 2027-03-14 → 2027-07-18 (+126d) | 2027-10-09 → 2027-12-30 (+82d) |  |  |  |
| 3 | **Irrigation Works** | 2027-03-14 → 2027-07-18 (+126d) | 2027-07-22 → 2027-11-14 (+115d) |  |  |  |
| 1 | **Secondary Irrigation** | 2027-03-14 → 2027-07-18 (+126d) | 2027-07-22 → 2027-11-14 (+115d) |  |  |  |
| 1 | **Pipe Work** | 2027-03-14 → 2027-07-18 (+126d) | 2027-06-05 → 2027-09-27 (+114d) |  |  |  |
| CON-LEG101-LR-4870 | Excavation for Secondary Irrigation [Local – 01 Segment-01] | 2027-03-14 → 2027-07-18 (+126d) | 2027-03-22 → 2027-07-27 (+127d) |  | 8d → -96.2d |  |
| CON-LEG101-LR-4940 | Sand bedding for Secondary Irrigation [Local – 01 Segment-01] | 2027-03-23 → 2027-07-27 (+126d) | 2027-03-28 → 2027-08-02 (+127d) |  | 8d → -96.2d |  |
| CON-LEG101-LR-5010 | Installation of Pipe for Secondary Irrigation [Local – 01 Segment-01] | 2027-03-29 → 2027-08-02 (+126d) | 2027-04-08 → 2027-08-14 (+128d) |  | 8d → -96.2d |  |
| CON-LEG101-LR-5080 | Sand Surround for Secondary Irrigation [Local – 01 Segment-01] | 2027-04-10 → 2027-08-14 (+126d) | 2027-04-14 → 2027-08-19 (+127d) |  | 8d → -96.2d |  |
| CON-LEG101-LR-5150 | Installation of Micron Marker Magnetic Tape [Local – 01 Segment-01] | 2027-04-15 → 2027-08-19 (+126d) | 2027-04-26 → 2027-08-31 (+127d) |  | 8d → -96.2d |  |
| CON-LEG101-LR-5210 | Backfilling to Subgrade Elevation [Local – 01 Segment-01] | 2027-04-27 → 2027-08-31 (+126d) | 2027-05-02 → 2027-09-06 (+127d) |  | 8d → -96.2d |  |
| CON-LEG101-LR-5410 | Installation of tubing for risers connections from laterals [Local – 01 Segment-01] | 2027-05-12 → 2027-09-06 (+117d) | 2027-06-05 → 2027-09-27 (+114d) |  | 0d → -96.2d |  |
| 2 | **Valves and Controller** | 2027-06-06 → 2027-09-27 (+113d) | 2027-07-22 → 2027-11-14 (+115d) |  |  |  |
| CON-LEG101-LR-5270 | Installation of Electrical Solenoid Valve [Local – 01 Segment-01] | 2027-06-06 → 2027-09-27 (+113d) | 2027-06-10 → 2027-10-03 (+115d) |  | 8d → -88.2d |  |
| CON-LEG101-LR-5310 | Installation of quick coupler valve [Local – 01 Segment-01] | 2027-06-12 → 2027-10-03 (+113d) | 2027-06-16 → 2027-10-09 (+115d) |  | 8d → -88.2d |  |
| CON-LEG101-LR-5350 | Installation of a Flush valve [Local – 01 Segment-01] | 2027-06-17 → 2027-10-09 (+114d) | 2027-06-22 → 2027-10-14 (+114d) |  | 8d → -88.2d |  |
| CON-LEG101-LR-5470 | Installation of Advanced Irrigation controller [Local – 01 Segment-01] | 2027-06-23 → 2027-10-14 (+113d) | 2027-06-30 → 2027-10-23 (+115d) |  | 8d → -88.2d |  |
| CON-LEG101-LR-5480 | Install single station decoder for valve connection [Local – 01 Segment-01] | 2027-07-01 → 2027-10-23 (+114d) | 2027-07-08 → 2027-10-31 (+115d) |  | 8d → -88.2d |  |
| CON-LEG101-LR-5520 | Installation of Decoder cables 12 AWG between valves and controllers [Local – 01 Segment-01] | 2027-07-10 → 2027-10-31 (+113d) | 2027-07-22 → 2027-11-14 (+115d) |  | 8d → -88.2d | resources Supply and installation of Decoder cables 12 AWG between valves and controllers, The cables shall be pulled through 32Ø UPVC conduit and inspection 10" round valve box every 100 meters, as per standard specification and drawings [324.1]; Excavator [48 h]; Labor [100 h]; Skilled Labor [50 h]; Eq. Operator [50 h]; Pipe Fitter [50 h] → Supply and installation of Decoder cables 12 AWG between valves and controllers, The cables shall be pulled through 32? UPVC conduit and inspection 10" round valve box every 100 meters, as per standard specification and drawings [324.1]; Excavator [48 h]; Labor [100 h]; Skilled Labor [50 h]; Eq. Operator [50 h]; Pipe Fitter [50 h] |
| 14 | **Curbs and edging** | 2027-07-24 → 2027-11-14 (+113d) | 2027-07-25 → 2027-11-16 (+114d) |  |  |  |
| CON-LEG101-LR-4790 | Installation of Curbs and edging [Local – 01 Segment-01] | 2027-07-24 → 2027-11-14 (+113d) | 2027-07-25 → 2027-11-16 (+114d) |  | 8d → -88.2d |  |
| 13 | **Landscape** | 2027-07-26 → 2027-11-16 (+113d) | 2027-10-09 → 2027-12-30 (+82d) |  |  |  |
| CON-LEG101-LR-4580 | Site preparation for Planting Area [Local – 01 Segment-01] | 2027-07-26 → 2027-11-16 (+113d) | 2027-08-04 → 2027-11-27 (+115d) |  | 8d → -88.2d |  |
| CON-LEG101-LR-4650 | Placing Agricutural Soil [Local – 01 Segment-01] | 2027-08-05 → 2027-11-27 (+114d) | 2027-08-15 → 2027-12-07 (+114d) |  | 8d → -88.2d |  |
| CON-LEG101-LR-4720 | Planting Shrubs And Ground Cover [Local – 01 Segment-01] | 2027-09-15 → 2027-12-07 (+83d) | 2027-10-09 → 2027-12-30 (+82d) |  | 8d → -62.2d |  |
| 2 | **LOCAL - 01 Segment-02 (From 1+066 to 2+133)** | 2027-06-06 → 2027-09-27 (+113d) | 2027-10-09 → 2028-01-30 (+113d) |  |  |  |
| 2 | **Irrigation Works** | 2027-06-06 → 2027-09-27 (+113d) | 2027-09-04 → 2027-12-27 (+114d) |  |  |  |
| 1 | **Secondary Irrigation** | 2027-06-06 → 2027-09-27 (+113d) | 2027-09-04 → 2027-12-27 (+114d) |  |  |  |
| 1 | **Pipe Work** | 2027-06-06 → 2027-09-27 (+113d) | 2027-07-29 → 2027-11-21 (+115d) |  |  |  |
| CON-LEG101-LR-4880 | Excavation for Secondary Irrigation [Local – 01 Segment-02] | 2027-06-06 → 2027-09-27 (+113d) | 2027-06-10 → 2027-10-03 (+115d) |  | 0d → -96.2d |  |
| CON-LEG101-LR-4950 | Sand bedding for Secondary Irrigation [Local – 01 Segment-02] | 2027-06-12 → 2027-10-03 (+113d) | 2027-06-16 → 2027-10-09 (+115d) |  | 0d → -96.2d |  |

| ID | Task | Start | Finish | Total float | Other |
| --- | --- | --- | --- | --- | --- |
| CON-LEG101-LR-5020 | Installation of Pipe for Secondary Irrigation [Local – 01 Segment-02] | 2027-06-17 → 2027-10-09 (+114d) | 2027-06-22 → 2027-10-14 (+114d) | 0d → -96.2d |  |
| CON-LEG101-LR-5090 | Sand Surround for Secondary Irrigation [Local – 01 Segment-02] | 2027-06-23 → 2027-10-14 (+113d) | 2027-06-28 → 2027-10-20 (+114d) | 0d → -96.2d |  |
| CON-LEG101-LR-5160 | Installation of Micron Marker Magnetic Tape [Local – 01 Segment-02] | 2027-06-29 → 2027-10-20 (+113d) | 2027-07-04 → 2027-10-26 (+114d) | 0d → -96.2d |  |
| CON-LEG101-LR-5220 | Backfilling to Subgrade Elevation [Local – 01 Segment-02] | 2027-07-05 → 2027-10-26 (+113d) | 2027-07-10 → 2027-11-01 (+114d) | 0d → -96.2d |  |
| CON-LEG101-LR-5420 | Installation of tubing for risers connections from laterals [Local – 01 Segment-02] | 2027-07-11 → 2027-11-01 (+113d) | 2027-07-29 → 2027-11-21 (+115d) | 0d → -96.2d |  |
| 2 | **Valves and Controller** | 2027-08-16 → 2027-12-07 (+113d) | 2027-09-04 → 2027-12-27 (+114d) |  |  |
| CON-LEG101-LR-5360 | Installation of a Flush valve [Local – 01 Segment-02] | 2027-08-16 → 2027-12-07 (+113d) | 2027-08-21 → 2027-12-13 (+114d) | 8d → -88.2d |  |
| CON-LEG101-LR-5530 | Installation of Decoder cables 12 AWG between valves and controllers [Local – 01 Segment-02] | 2027-08-22 → 2027-12-13 (+113d) | 2027-09-04 → 2027-12-27 (+114d) | 8d → -88.2d | resources Supply and installation of Decoder cables 12 AWG between valves and controllers, The cables shall be pulled through 32Ø UPVC conduit and inspection 10" round valve box every 100 meters, as per standard specification and drawings [108.04]; Excavator [48 h]; Labor [100 h]; Skilled Labor [50 h]; Eq. Operator [50 h]; Pipe Fitter [50 h] → Supply and installation of Decoder cables 12 AWG between valves and controllers, The cables shall be pulled through 32? UPVC conduit and inspection 10" round valve box every 100 meters, as per standard specification and drawings [108.04]; Excavator [48 h]; Labor [100 h]; Skilled Labor [50 h]; Eq. Operator [50 h]; Pipe Fitter [50 h] |
| 14 | **Curbs and edging** | 2027-09-05 → 2027-12-27 (+113d) | 2027-09-06 → 2027-12-29 (+114d) |  |  |
| CON-LEG101-LR-4800 | Installation of Curbs and edging [Local – 01 Segment-02] | 2027-09-05 → 2027-12-27 (+113d) | 2027-09-06 → 2027-12-29 (+114d) | 8d → -88.2d |  |
| 13 | **Landscape** | 2027-09-07 → 2027-12-29 (+113d) | 2027-10-09 → 2028-01-30 (+113d) |  |  |
| CON-LEG101-LR-4590 | Site preparation for Planting Area [Local – 01 Segment-02] | 2027-09-07 → 2027-12-29 (+113d) | 2027-09-16 → 2028-01-09 (+115d) | 8d → -88.2d |  |
| CON-LEG101-LR-4660 | Placing Agricutural Soil [Local – 01 Segment-02] | 2027-09-18 → 2028-01-09 (+113d) | 2027-09-28 → 2028-01-19 (+113d) | 8d → -88.2d |  |
| CON-LEG101-LR-4730 | Planting Shrubs And Ground Cover [Local – 01 Segment-02] | 2027-09-29 → 2028-01-19 (+112d) | 2027-10-09 → 2028-01-30 (+113d) | 8d → -88.2d |  |
| 3 | **LOCAL - 01 Segment-03 (From 2+133 to 3+200)** | 2027-07-31 → 2027-11-21 (+113d) | 2027-10-10 → 2028-01-31 (+113d) |  |  |
| 2 | **Irrigation Works** | 2027-07-31 → 2027-11-21 (+113d) | 2027-10-04 → 2028-01-25 (+113d) |  |  |
| 1 | **Secondary Irrigation** | 2027-07-31 → 2027-11-21 (+113d) | 2027-10-04 → 2028-01-25 (+113d) |  |  |
| 1 | **Pipe Work** | 2027-07-31 → 2027-11-21 (+113d) | 2027-10-04 → 2028-01-25 (+113d) |  |  |
| CON-LEG101-LR-4890 | Excavation for Secondary Irrigation [Local – 01 Segment-03] | 2027-07-31 → 2027-11-21 (+113d) | 2027-08-04 → 2027-11-27 (+115d) | 0d → -96.2d |  |
| CON-LEG101-LR-4960 | Sand bedding for Secondary Irrigation [Local – 01 Segment-03] | 2027-08-05 → 2027-11-27 (+114d) | 2027-08-10 → 2027-12-02 (+114d) | 7d → -89.2d |  |
| CON-LEG101-LR-5030 | Installation of Pipe for Secondary Irrigation [Local – 01 Segment-03] | 2027-08-11 → 2027-12-02 (+113d) | 2027-08-16 → 2027-12-08 (+114d) | 7d → -89.2d |  |
| CON-LEG101-LR-5100 | Sand Surround for Secondary Irrigation [Local – 01 Segment-03] | 2027-08-17 → 2027-12-08 (+113d) | 2027-08-25 → 2027-12-18 (+115d) | 12d → -84.2d |  |
| CON-LEG101-LR-5170 | Installation of Micron Marker Magnetic Tape [Local – 01 Segment-03] | 2027-08-26 → 2027-12-18 (+114d) | 2027-09-04 → 2027-12-27 (+114d) | 12d → -84.2d |  |
| CON-LEG101-LR-5230 | Backfilling to Subgrade Elevation [Local – 01 Segment-03] | 2027-09-05 → 2027-12-27 (+113d) | 2027-09-13 → 2028-01-05 (+114d) | 12d → -84.2d |  |
| CON-LEG101-LR-5430 | Installation of tubing for risers connections from laterals [Local – 01 Segment-03] | 2027-09-14 → 2028-01-05 (+113d) | 2027-10-04 → 2028-01-25 (+113d) | 12d → -84.2d |  |
| 2 | **Valves and Controller** | 2027-08-17 → 2027-12-08 (+113d) | 2027-09-05 → 2027-12-28 (+114d) |  |  |
| CON-LEG101-LR-5370 | Installation of a Flush valve [Local – 01 Segment-03] | 2027-08-17 → 2027-12-08 (+113d) | 2027-08-22 → 2027-12-14 (+114d) | 7d → -89.2d |  |
| CON-LEG101-LR-5540 | Installation of Decoder cables 12 AWG between valves and controllers [Local – 01 Segment-03] | 2027-08-23 → 2027-12-14 (+113d) | 2027-09-05 → 2027-12-28 (+114d) | 7d → -89.2d | resources Supply and installation of Decoder cables 12 AWG between valves and controllers, The cables shall be pulled through 32Ø UPVC conduit and inspection 10" round valve box every 100 meters, as per standard specification and drawings [108.04]; Excavator [48 h]; Labor [100 h]; Skilled Labor [50 h]; Eq. Operator [50 h]; Pipe Fitter [50 h] → Supply and installation of Decoder cables 12 AWG between valves and controllers, The cables shall be pulled through 32? UPVC conduit and inspection 10" round valve box every 100 meters, as per standard specification and drawings [108.04]; Excavator [48 h]; Labor [100 h]; Skilled Labor [50 h]; Eq. Operator [50 h]; Pipe Fitter [50 h] |
| 14 | **Curbs and edging** | 2027-09-06 → 2027-12-28 (+113d) | 2027-09-07 → 2027-12-30 (+114d) |  |  |
| CON-LEG101-LR-4810 | Installation of Curbs and edging [Local – 01 Segment-03] | 2027-09-06 → 2027-12-28 (+113d) | 2027-09-07 → 2027-12-30 (+114d) | 7d → -89.2d |  |
| 13 | **Landscape** | 2027-09-08 → 2027-12-30 (+113d) | 2027-10-10 → 2028-01-31 (+113d) |  |  |
| CON-LEG101-LR-4600 | Site preparation for Planting Area [Local – 01 Segment-03] | 2027-09-08 → 2027-12-30 (+113d) | 2027-09-18 → 2028-01-10 (+114d) | 7d → -89.2d |  |
| CON-LEG101-LR-4670 | Placing Agricutural Soil [Local – 01 Segment-03] | 2027-09-19 → 2028-01-10 (+113d) | 2027-09-29 → 2028-01-20 (+113d) | 7d → -89.2d |  |
| CON-LEG101-LR-4740 | Planting Shrubs And Ground Cover [Local – 01 Segment-03] | 2027-09-30 → 2028-01-20 (+112d) | 2027-10-10 → 2028-01-31 (+113d) | 7d → -89.2d |  |
| 3 | **Local – 02** | 2027-08-05 → 2027-11-27 (+114d) | 2027-10-18 → 2028-02-08 (+113d) |  |  |
| 3 | **Irrigation Works** | 2027-08-05 → 2027-11-27 (+114d) | 2027-10-06 → 2028-01-27 (+113d) |  |  |
| 1 | **Secondary Irrigation** | 2027-08-05 → 2027-11-27 (+114d) | 2027-10-06 → 2028-01-27 (+113d) |  |  |
| 1 | **Pipe Work** | 2027-08-05 → 2027-11-27 (+114d) | 2027-10-06 → 2028-01-27 (+113d) |  |  |
| CON-LEG101-LR-4900 | Excavation for Secondary Irrigation [Local – 02 ] | 2027-08-05 → 2027-11-27 (+114d) | 2027-08-09 → 2027-12-01 (+114d) | 0d → -96.2d |  |
| CON-LEG101-LR-4970 | Sand bedding for Secondary Irrigation [Local – 02 ] | 2027-08-10 → 2027-12-01 (+113d) | 2027-08-14 → 2027-12-06 (+114d) | 0d → -96.2d |  |
| CON-LEG101-LR-5040 | Installation of Pipe for Secondary Irrigation [Local – 02 ] | 2027-08-15 → 2027-12-06 (+113d) | 2027-08-18 → 2027-12-11 (+115d) | 0d → -96.2d |  |
| CON-LEG101-LR-5110 | Sand Surround for Secondary Irrigation [Local – 02 ] | 2027-08-19 → 2027-12-11 (+114d) | 2027-08-28 → 2027-12-20 (+114d) | 10d → -86.2d |  |
| CON-LEG101-LR-5180 | Installation of Micron Marker Magnetic Tape [Local – 02 ] | 2027-08-29 → 2027-12-20 (+113d) | 2027-09-06 → 2027-12-29 (+114d) | 10d → -86.2d |  |
| CON-LEG101-LR-5240 | Backfilling to Subgrade Elevation [Local – 02 ] | 2027-09-07 → 2027-12-29 (+113d) | 2027-09-18 → 2028-01-10 (+114d) | 10d → -86.2d |  |
| CON-LEG101-LR-5440 | Installation of tubing for risers connections from laterals [Local – 02 ] | 2027-09-19 → 2028-01-10 (+113d) | 2027-10-06 → 2028-01-27 (+113d) | 10d → -86.2d |  |
| 2 | **Valves and Controller** | 2027-08-19 → 2027-12-11 (+114d) | 2027-09-22 → 2028-01-15 (+115d) |  |  |
| CON-LEG101-LR-5280 | Installation of Electrical Solenoid Valve [Local – 02 ] | 2027-08-19 → 2027-12-11 (+114d) | 2027-08-24 → 2027-12-16 (+114d) | 0d → -96.2d |  |
| CON-LEG101-LR-5320 | Installation of quick coupler valve [Local – 02 ] | 2027-08-25 → 2027-12-16 (+113d) | 2027-08-30 → 2027-12-22 (+114d) | 0d → -96.2d |  |
| CON-LEG101-LR-5380 | Installation of a Flush valve [Local – 02 ] | 2027-08-31 → 2027-12-22 (+113d) | 2027-09-04 → 2027-12-27 (+114d) | 0d → -96.2d |  |
| CON-LEG101-LR-5490 | Install single station decoder for valve connection [Local – 02 ] | 2027-09-05 → 2027-12-27 (+113d) | 2027-09-12 → 2028-01-04 (+114d) | 0d → -96.2d |  |
| CON-LEG101-LR-5550 | Installation of Decoder cables 12 AWG between valves and controllers [Local – 02 ] | 2027-09-13 → 2028-01-04 (+113d) | 2027-09-22 → 2028-01-15 (+115d) | 0d → -96.2d | resources Supply and installation of Decoder cables 12 AWG between valves and controllers, The cables shall be pulled through 32Ø UPVC conduit and inspection 10" round valve box every 100 meters, as per standard specification and drawings [108.04]; Excavator [48 h]; Labor [100 h]; Skilled Labor [50 h]; Eq. Operator [50 h]; Pipe Fitter [50 h] → Supply and installation of Decoder cables 12 AWG between valves and controllers, The cables shall be pulled through 32? UPVC conduit and inspection 10" round valve box every 100 meters, as per standard specification and drawings [108.04]; Excavator [48 h]; Labor [100 h]; Skilled Labor [50 h]; Eq. Operator [50 h]; Pipe Fitter [50 h] |
| 14 | **Curbs and edging** | 2027-09-25 → 2028-01-15 (+112d) | 2027-09-27 → 2028-01-18 (+113d) |  |  |
| CON-LEG101-LR-4830 | Installation of Curbs and edging [Local – 02 ] | 2027-09-25 → 2028-01-15 (+112d) | 2027-09-27 → 2028-01-18 (+113d) | 0d → -96.2d |  |
| 13 | **Landscape** | 2027-09-28 → 2028-01-18 (+112d) | 2027-10-18 → 2028-02-08 (+113d) |  |  |
| CON-LEG101-LR-4610 | Site preparation for Planting Area [Local – 02 ] | 2027-09-28 → 2028-01-18 (+112d) | 2027-10-04 → 2028-01-25 (+113d) | 0d → -96.2d |  |
| CON-LEG101-LR-4680 | Placing Agricutural Soil [Local – 02 ] | 2027-10-05 → 2028-01-25 (+112d) | 2027-10-11 → 2028-02-01 (+113d) | 0d → -96.2d |  |
| CON-LEG101-LR-4750 | Planting Shrubs And Ground Cover [Local – 02 ] | 2027-10-12 → 2028-02-01 (+112d) | 2027-10-18 → 2028-02-08 (+113d) | 0d → -96.2d |  |
| 5 | **Local – 04** | 2027-08-05 → 2027-11-27 (+114d) | 2027-10-09 → 2028-01-30 (+113d) |  |  |
| 2 | **Irrigation Works** | 2027-08-05 → 2027-11-27 (+114d) | 2027-09-25 → 2028-01-16 (+113d) |  |  |
| 1 | **Secondary Irrigation** | 2027-08-05 → 2027-11-27 (+114d) | 2027-09-25 → 2028-01-16 (+113d) |  |  |
| 1 | **Pipe Work** | 2027-08-05 → 2027-11-27 (+114d) | 2027-09-07 → 2027-12-30 (+114d) |  |  |
| CON-LEG101-LR-4910 | Excavation for Secondary Irrigation [Local – 04 ] | 2027-08-05 → 2027-11-27 (+114d) | 2027-08-08 → 2027-11-30 (+114d) | 7d → -89.2d |  |
| CON-LEG101-LR-4980 | Sand bedding for Secondary Irrigation [Local – 04 ] | 2027-08-09 → 2027-11-30 (+113d) | 2027-08-15 → 2027-12-07 (+114d) | 8d → -88.2d |  |
| CON-LEG101-LR-5050 | Installation of Pipe for Secondary Irrigation [Local – 04 ] | 2027-08-16 → 2027-12-07 (+113d) | 2027-08-24 → 2027-12-16 (+114d) | 8d → -88.2d |  |
| CON-LEG101-LR-5120 | Sand Surround for Secondary Irrigation [Local – 04 ] | 2027-08-25 → 2027-12-16 (+113d) | 2027-08-28 → 2027-12-20 (+114d) | 8d → -88.2d |  |
| CON-LEG101-LR-5190 | Installation of Micron Marker Magnetic Tape [Local – 04 ] | 2027-08-29 → 2027-12-20 (+113d) | 2027-09-02 → 2027-12-26 (+115d) | 8d → -88.2d |  |
| CON-LEG101-LR-5250 | Backfilling to Subgrade Elevation [Local – 04 ] | 2027-09-04 → 2027-12-26 (+113d) | 2027-09-05 → 2027-12-28 (+114d) | 8d → -88.2d |  |
| CON-LEG101-LR-5450 | Installation of tubing for risers connections from laterals [Local – 04 ] | 2027-09-06 → 2027-12-28 (+113d) | 2027-09-07 → 2027-12-30 (+114d) | 8d → -88.2d |  |
| 2 | **Valves and Controller** | 2027-08-25 → 2027-12-16 (+113d) | 2027-09-25 → 2028-01-16 (+113d) |  |  |
| CON-LEG101-LR-5290 | Installation of Electrical Solenoid Valve [Local – 04 ] | 2027-08-25 → 2027-12-16 (+113d) | 2027-08-31 → 2027-12-23 (+114d) | 8d → -88.2d |  |

| ID | Task | Start | Finish | Total float | Predecessors | Other |
| --- | --- | --- | --- | --- | --- | --- |
| CON-LEG101-LR-5330 | Installation of quick coupler valve [Local – 04 ] | 2027-09-01 → 2027-12-23 (+113d) | 2027-09-07 → 2027-12-30 (+114d) | 8d → -88.2d |  |  |
| CON-LEG101-LR-5390 | Installation of a Flush valve [Local – 04 ] | 2027-09-08 → 2027-12-30 (+113d) | 2027-09-13 → 2028-01-05 (+114d) | 8d → -88.2d |  |  |
| CON-LEG101-LR-5500 | Install single station decoder for valve connection [Local – 04 ] | 2027-09-14 → 2028-01-05 (+113d) | 2027-09-21 → 2028-01-13 (+114d) | 8d → -88.2d |  |  |
| CON-LEG101-LR-5560 | Installation of Decoder cables 12 AWG between valves and controllers [Local – 04 ] | 2027-09-22 → 2028-01-13 (+113d) | 2027-09-25 → 2028-01-16 (+113d) | 8d → -88.2d |  | resources Supply and installation of Decoder cables 12 AWG between valves and controllers, The cables shall be pulled through 32Ø UPVC conduit and inspection 10" round valve box every 100 meters, as per standard specification and drawings [108.04]; Excavator [48 h]; Labor [100 h]; Skilled Labor [50 h]; Eq. Operator [50 h]; Pipe Fitter [50 h] → Supply and installation of Decoder cables 12 AWG between valves and controllers, The cables shall be pulled through 32? UPVC conduit and inspection 10" round valve box every 100 meters, as per standard specification and drawings [108.04]; Excavator [48 h]; Labor [100 h]; Skilled Labor [50 h]; Eq. Operator [50 h]; Pipe Fitter [50 h] |
| 14 | **Curbs and edging** | 2027-09-26 → 2028-01-16 (+112d) | 2027-09-28 → 2028-01-19 (+113d) |  |  |  |
| CON-LEG101-LR-4840 | Installation of Curbs and edging [Local – 04 ] | 2027-09-26 → 2028-01-16 (+112d) | 2027-09-28 → 2028-01-19 (+113d) | 8d → -88.2d |  |  |
| 13 | **Landscape** | 2027-09-29 → 2028-01-19 (+112d) | 2027-10-09 → 2028-01-30 (+113d) |  |  |  |
| CON-LEG101-LR-4620 | Site preparation for Planting Area [Local – 04 ] | 2027-09-29 → 2028-01-19 (+112d) | 2027-10-02 → 2028-01-23 (+113d) | 8d → -88.2d |  |  |
| CON-LEG101-LR-4690 | Placing Agricutural Soil [Local – 04 ] | 2027-10-03 → 2028-01-23 (+112d) | 2027-10-05 → 2028-01-26 (+113d) | 8d → -88.2d |  |  |
| CON-LEG101-LR-4760 | Planting Shrubs And Ground Cover [Local – 04 ] | 2027-10-06 → 2028-01-26 (+112d) | 2027-10-09 → 2028-01-30 (+113d) | 8d → -88.2d |  |  |
| 6 | **Local – 06** | 2027-08-05 → 2027-11-27 (+114d) | 2027-10-10 → 2028-01-31 (+113d) |  |  |  |
| 2 | **Irrigation Works** | 2027-08-05 → 2027-11-27 (+114d) | 2027-09-21 → 2028-01-13 (+114d) |  |  |  |
| 1 | **Secondary Irrigation** | 2027-08-05 → 2027-11-27 (+114d) | 2027-09-21 → 2028-01-13 (+114d) |  |  |  |
| 1 | **Pipe Work** | 2027-08-05 → 2027-11-27 (+114d) | 2027-08-24 → 2027-12-16 (+114d) |  |  |  |
| CON-LEG101-LR-4920 | Excavation for Secondary Irrigation [Local – 06 ] | 2027-08-05 → 2027-11-27 (+114d) | 2027-08-08 → 2027-11-30 (+114d) | 7d → -89.2d |  |  |
| CON-LEG101-LR-5060 | Installation of Pipe for Secondary Irrigation [Local – 06 ] | 2027-08-09 → 2027-11-30 (+113d) | 2027-08-11 → 2027-12-04 (+115d) | 7d → -89.2d |  |  |
| CON-LEG101-LR-5260 | Backfilling to Subgrade Elevation [Local – 06 ] | 2027-08-12 → 2027-12-04 (+114d) | 2027-08-15 → 2027-12-07 (+114d) | 7d → -89.2d |  |  |
| CON-LEG101-LR-5460 | Installation of tubing for risers connections from laterals [Local – 06 ] | 2027-08-16 → 2027-12-07 (+113d) | 2027-08-24 → 2027-12-16 (+114d) | 7d → -89.2d |  |  |
| 2 | **Valves and Controller** | 2027-08-25 → 2027-12-16 (+113d) | 2027-09-21 → 2028-01-13 (+114d) |  |  |  |
| CON-LEG101-LR-5300 | Installation of Electrical Solenoid Valve [Local – 06 ] | 2027-08-25 → 2027-12-16 (+113d) | 2027-08-29 → 2027-12-21 (+114d) | 7d → -89.2d |  |  |
| CON-LEG101-LR-5340 | Installation of quick coupler valve [Local – 06 ] | 2027-08-30 → 2027-12-21 (+113d) | 2027-09-02 → 2027-12-26 (+115d) | 7d → -89.2d |  |  |
| CON-LEG101-LR-5400 | Installation of a Flush valve [Local – 06 ] | 2027-09-04 → 2027-12-26 (+113d) | 2027-09-08 → 2028-01-01 (+115d) | 7d → -89.2d |  |  |
| CON-LEG101-LR-5510 | Install single station decoder for valve connection [Local – 06 ] | 2027-09-09 → 2028-01-01 (+114d) | 2027-09-14 → 2028-01-06 (+114d) | 7d → -89.2d |  |  |
| CON-LEG101-LR-5570 | Installation of Decoder cables 12 AWG between valves and controllers [Local – 06 ] | 2027-09-15 → 2028-01-06 (+113d) | 2027-09-21 → 2028-01-13 (+114d) | 7d → -89.2d |  | resources Supply and installation of Decoder cables 12 AWG between valves and controllers, The cables shall be pulled through 32Ø UPVC conduit and inspection 10" round valve box every 100 meters, as per standard specification and drawings [108.04]; Excavator [48 h]; Labor [100 h]; Skilled Labor [50 h]; Eq. Operator [50 h]; Pipe Fitter [50 h] → Supply and installation of Decoder cables 12 AWG between valves and controllers, The cables shall be pulled through 32? UPVC conduit and inspection 10" round valve box every 100 meters, as per standard specification and drawings [108.04]; Excavator [48 h]; Labor [100 h]; Skilled Labor [50 h]; Eq. Operator [50 h]; Pipe Fitter [50 h] |
| 14 | **Curbs and edging** | 2027-09-22 → 2028-01-13 (+113d) | 2027-09-26 → 2028-01-17 (+113d) |  |  |  |
| CON-LEG101-LR-4850 | Installation of Curbs and edging [Local – 06 ] | 2027-09-22 → 2028-01-13 (+113d) | 2027-09-26 → 2028-01-17 (+113d) | 7d → -89.2d |  |  |
| 13 | **Landscape** | 2027-09-27 → 2028-01-17 (+112d) | 2027-10-10 → 2028-01-31 (+113d) |  |  |  |
| CON-LEG101-LR-4630 | Site preparation for Planting Area [Local – 06 ] | 2027-09-27 → 2028-01-17 (+112d) | 2027-09-30 → 2028-01-22 (+114d) | 7d → -89.2d |  |  |
| CON-LEG101-LR-4700 | Placing Agricutural Soil [Local – 06 ] | 2027-10-02 → 2028-01-22 (+112d) | 2027-10-05 → 2028-01-26 (+113d) | 7d → -89.2d |  |  |
| CON-LEG101-LR-4770 | Planting Shrubs And Ground Cover [Local – 06 ] | 2027-10-06 → 2028-01-26 (+112d) | 2027-10-10 → 2028-01-31 (+113d) | 7d → -89.2d |  |  |
| 1 | **Roundabout - 01 (L01 & L04)** | 2027-04-07 → 2027-09-29 (+175d) | 2027-10-07 → 2028-03-25 (+170d) |  |  |  |
| 1 | **Irrigation Works** | 2027-04-07 → 2027-09-29 (+175d) | 2027-08-01 → 2028-01-18 (+170d) |  |  |  |
| 1 | **Secondary Irrigation** | 2027-04-07 → 2027-09-29 (+175d) | 2027-08-01 → 2028-01-18 (+170d) |  |  |  |
| 1 | **Pipe Work** | 2027-04-07 → 2027-09-29 (+175d) | 2027-08-01 → 2028-01-18 (+170d) |  |  |  |
| CON-LEG101-RA-1120 | Excavation for Secondary Irrigation [Roundabout : 01 ] | 2027-04-07 → 2027-09-29 (+175d) | 2027-04-19 → 2027-10-11 (+175d) | 0d → -145d |  |  |
| CON-LEG101-RA-1150 | Sand bedding for Secondary Irrigation [Roundabout : 01 ] | 2027-04-20 → 2027-10-12 (+175d) | 2027-05-02 → 2027-10-24 (+175d) | 0d → -145d |  |  |
| CON-LEG101-RA-1180 | Installation of Pipe for Secondary Irrigation [Roundabout : 01 ] | 2027-05-03 → 2027-10-25 (+175d) | 2027-05-19 → 2027-11-06 (+171d) | 0d → -145d |  |  |
| CON-LEG101-RA-1210 | Sand Surround for Secondary Irrigation [Roundabout : 01 ] | 2027-05-20 → 2027-11-07 (+171d) | 2027-06-05 → 2027-11-22 (+170d) | 9d → -136d |  |  |
| CON-LEG101-RA-1240 | Installation of Micron Marker Magnetic Tape [Roundabout : 01 ] | 2027-06-06 → 2027-11-23 (+170d) | 2027-06-21 → 2027-12-08 (+170d) | 9d → -136d |  |  |
| CON-LEG101-RA-1270 | Backfilling to Subgrade Elevation [Roundabout : 01 ] | 2027-06-22 → 2027-12-09 (+170d) | 2027-07-07 → 2027-12-25 (+171d) | 9d → -136d |  |  |
| CON-LEG101-RA-1390 | Installation of tubing for risers connections from laterals [Roundabout : 01 ] | 2027-07-08 → 2027-12-26 (+171d) | 2027-08-01 → 2028-01-18 (+170d) | 9d → -136d |  |  |
| 2 | **Valves and Controller** | 2027-05-20 → 2027-11-07 (+171d) | 2027-07-17 → 2028-01-02 (+169d) |  |  |  |
| CON-LEG101-RA-1300 | Installation of Electrical Solenoid Valve [Roundabout : 01 ] | 2027-05-20 → 2027-11-07 (+171d) | 2027-05-25 → 2027-11-11 (+170d) | 0d → -145d |  |  |
| CON-LEG101-RA-1330 | Installation of quick coupler valve [Roundabout : 01 ] | 2027-05-26 → 2027-11-13 (+171d) | 2027-05-31 → 2027-11-17 (+170d) | 0d → -145d |  |  |
| CON-LEG101-RA-1360 | Installation of a Flush valve [Roundabout : 01 ] | 2027-06-01 → 2027-11-18 (+170d) | 2027-06-13 → 2027-11-30 (+170d) | 0d → -145d |  |  |
| CON-LEG101-RA-1420 | Install single station decoder for valve connection [Roundabout : 01 ] | 2027-06-15 → 2027-12-01 (+169d) | 2027-06-30 → 2027-12-16 (+169d) | 10d → -134d |  |  |
| 3 | **Curbs and edging** | 2027-07-18 → 2028-01-03 (+169d) | 2027-07-31 → 2028-01-16 (+169d) |  |  |  |
| CON-LEG101-RA-1090 | Installation of Curbs and edging [Roundabout : 01 ] | 2027-07-18 → 2028-01-03 (+169d) | 2027-07-31 → 2028-01-16 (+169d) | 10d → -134d | Installation of Decoder cables 12 AWG between valves and controllers [Roundabout : 01 ], CON-LEG101-PR-3070, CON-LEG101-EN-3400 → A, CON-LEG101-PR-3070, CON-LEG101-EN-3400 |  |
| 2 | **Landscape** | 2027-08-02 → 2028-01-19 (+170d) | 2027-10-07 → 2028-03-25 (+170d) |  |  |  |
| CON-LEG101-RA-1000 | Site preparation for Planting Area [Roundabout : 01 ] | 2027-08-02 → 2028-01-19 (+170d) | 2027-08-23 → 2028-02-09 (+170d) | 9d → -136d |  |  |
| CON-LEG101-RA-1030 | Placing Agricutural Soil [Roundabout : 01 ] | 2027-08-24 → 2028-02-10 (+170d) | 2027-09-14 → 2028-03-02 (+170d) | 9d → -136d |  |  |
| CON-LEG101-RA-1060 | Planting Shrubs And Ground Cover [Roundabout : 01 ] | 2027-09-15 → 2028-03-04 (+171d) | 2027-10-07 → 2028-03-25 (+170d) | 9d → -136d |  |  |
| 4 | **Roundabout - 02 (L01 & L03)** | 2027-06-14 → 2027-12-01 (+170d) | 2027-10-18 → 2028-04-04 (+169d) |  |  |  |
| 1 | **Irrigation Works** | 2027-06-14 → 2027-12-01 (+170d) | 2027-10-04 → 2028-03-21 (+169d) |  |  |  |
| 1 | **Secondary Irrigation** | 2027-06-14 → 2027-12-01 (+170d) | 2027-10-04 → 2028-03-21 (+169d) |  |  |  |
| 1 | **Pipe Work** | 2027-06-14 → 2027-12-01 (+170d) | 2027-10-04 → 2028-03-21 (+169d) |  |  |  |
| CON-LEG101-RA-1130 | Excavation for Secondary Irrigation [Roundabout : 02 ] | 2027-06-14 → 2027-12-01 (+170d) | 2027-06-26 → 2027-12-13 (+170d) | 0d → -145d |  |  |
| CON-LEG101-RA-1160 | Sand bedding for Secondary Irrigation [Roundabout : 02 ] | 2027-06-27 → 2027-12-14 (+170d) | 2027-07-08 → 2027-12-26 (+171d) | 0d → -145d |  |  |
| CON-LEG101-RA-1190 | Installation of Pipe for Secondary Irrigation [Roundabout : 02 ] | 2027-07-10 → 2027-12-27 (+170d) | 2027-07-21 → 2028-01-08 (+171d) | 0d → -145d |  |  |
| CON-LEG101-RA-1220 | Sand Surround for Secondary Irrigation [Roundabout : 02 ] | 2027-07-22 → 2028-01-09 (+171d) | 2027-08-07 → 2028-01-24 (+170d) | 12d → -133d |  |  |
| CON-LEG101-RA-1250 | Installation of Micron Marker Magnetic Tape [Roundabout : 02 ] | 2027-08-08 → 2028-01-25 (+170d) | 2027-08-23 → 2028-02-09 (+170d) | 12d → -133d |  |  |
| CON-LEG101-RA-1280 | Backfilling to Subgrade Elevation [Roundabout : 02 ] | 2027-08-24 → 2028-02-10 (+170d) | 2027-09-08 → 2028-02-26 (+171d) | 12d → -133d |  |  |
| CON-LEG101-RA-1400 | Installation of tubing for risers connections from laterals [Roundabout : 02 ] | 2027-09-09 → 2028-02-27 (+171d) | 2027-10-04 → 2028-03-21 (+169d) | 12d → -133d |  |  |
| 2 | **Valves and Controller** | 2027-07-22 → 2028-01-09 (+171d) | 2027-09-08 → 2028-02-26 (+171d) |  |  |  |
| CON-LEG101-RA-1310 | Installation of Electrical Solenoid Valve [Roundabout : 02 ] | 2027-07-22 → 2028-01-09 (+171d) | 2027-07-27 → 2028-01-13 (+170d) | 0d → -145d |  |  |
| CON-LEG101-RA-1340 | Installation of quick coupler valve [Roundabout : 02 ] | 2027-07-28 → 2028-01-15 (+171d) | 2027-08-02 → 2028-01-19 (+170d) | 0d → -145d |  |  |
| CON-LEG101-RA-1370 | Installation of a Flush valve [Roundabout : 02 ] | 2027-08-03 → 2028-01-20 (+170d) | 2027-08-15 → 2028-02-01 (+170d) | 0d → -145d |  |  |
| CON-LEG101-RA-1430 | Install single station decoder for valve connection [Roundabout : 02 ] | 2027-08-16 → 2028-02-02 (+170d) | 2027-08-23 → 2028-02-09 (+170d) | 0d → -145d |  |  |
| CON-LEG101-RA-1460 | Installation of Decoder cables 12 AWG between valves and controllers [Roundabout : 02 ] | 2027-08-24 → 2028-02-10 (+170d) | 2027-09-08 → 2028-02-26 (+171d) | 0d → -145d |  | resources Supply and installation of Decoder cables 12 AWG between valves and controllers, The cables shall be pulled through 32Ø UPVC conduit and inspection 10" round valve box every 100 meters, as per standard specification and drawings [432.15]; Excavator [96 h]; Labor [200 h]; Skilled Labor [100 h]; Eq. Operator [100 h]; Pipe Fitter [100 h] → Supply and installation of Decoder cables 12 AWG between valves and controllers, The cables shall be pulled through 32? UPVC conduit and inspection 10" round valve box every 100 meters, as per standard specification and drawings [432.15]; Excavator [96 h]; Labor [200 h]; Skilled Labor [100 h]; Eq. Operator [100 h]; Pipe Fitter [100 h] |
| 3 | **Curbs and edging** | 2027-09-09 → 2028-02-27 (+171d) | 2027-09-12 → 2028-02-29 (+170d) |  |  |  |

| ID | Task | Start | Finish | Complete | Total float | Predecessors | Other |
| --- | --- | --- | --- | --- | --- | --- | --- |
| CON-LEG101-RA-1100 | Installation of Curbs and edging [Roundabout : 02 ] | 2027-09-09 → 2028-02-27 (+171d) | 2027-09-12 → 2028-02-29 (+170d) |  | 0d → -145d |  |  |
| 2 | **Landscape** | 2027-09-13 → 2028-03-01 (+170d) | 2027-10-18 → 2028-04-04 (+169d) |  |  |  |  |
| CON-LEG101-RA-1010 | Site preparation for Planting Area [Roundabout : 02 ] | 2027-09-13 → 2028-03-01 (+170d) | 2027-09-25 → 2028-03-12 (+169d) |  | 0d → -145d |  |  |
| CON-LEG101-RA-1040 | Placing Agricutural Soil [Roundabout : 02 ] | 2027-09-26 → 2028-03-13 (+169d) | 2027-10-06 → 2028-03-23 (+169d) |  | 0d → -145d |  |  |
| CON-LEG101-RA-1070 | Planting Shrubs And Ground Cover [Roundabout : 02 ] | 2027-10-07 → 2028-03-25 (+170d) | 2027-10-18 → 2028-04-04 (+169d) |  | 0d → -145d |  |  |
| 2 | **Roundabout - 03 (L03 & L05)** | 2027-06-27 → 2027-12-14 (+170d) | 2027-10-18 → 2028-04-04 (+169d) |  |  |  |  |
| 1 | **Irrigation Works** | 2027-06-27 → 2027-12-14 (+170d) | 2027-10-03 → 2028-03-20 (+169d) |  |  |  |  |
| 1 | **Secondary Irrigation** | 2027-06-27 → 2027-12-14 (+170d) | 2027-10-03 → 2028-03-20 (+169d) |  |  |  |  |
| 1 | **Pipe Work** | 2027-06-27 → 2027-12-14 (+170d) | 2027-10-03 → 2028-03-20 (+169d) |  |  |  |  |
| CON-LEG101-RA-1140 | Excavation for Secondary Irrigation [Roundabout : 03 ] | 2027-06-27 → 2027-12-14 (+170d) | 2027-07-08 → 2027-12-26 (+171d) |  | 0d → -145d |  |  |
| CON-LEG101-RA-1170 | Sand bedding for Secondary Irrigation [Roundabout : 03 ] | 2027-07-10 → 2027-12-27 (+170d) | 2027-07-20 → 2028-01-06 (+170d) |  | 0d → -145d |  |  |
| CON-LEG101-RA-1200 | Installation of Pipe for Secondary Irrigation [Roundabout : 03 ] | 2027-07-21 → 2028-01-08 (+171d) | 2027-08-02 → 2028-01-19 (+170d) |  | 0d → -145d |  |  |
| CON-LEG101-RA-1230 | Sand Surround for Secondary Irrigation [Roundabout : 03 ] | 2027-08-03 → 2028-01-20 (+170d) | 2027-08-15 → 2028-02-01 (+170d) |  | 13d → -132d |  |  |
| CON-LEG101-RA-1260 | Installation of Micron Marker Magnetic Tape [Roundabout : 03 ] | 2027-08-16 → 2028-02-02 (+170d) | 2027-08-28 → 2028-02-14 (+170d) |  | 13d → -132d |  |  |
| CON-LEG101-RA-1290 | Backfilling to Subgrade Elevation [Roundabout : 03 ] | 2027-08-29 → 2028-02-15 (+170d) | 2027-09-09 → 2028-02-27 (+171d) |  | 13d → -132d |  |  |
| CON-LEG101-RA-1410 | Installation of tubing for risers connections from laterals [Roundabout : 03 ] | 2027-09-11 → 2028-02-28 (+170d) | 2027-10-03 → 2028-03-20 (+169d) |  | 13d → -132d |  |  |
| 2 | **Valves and Controller** | 2027-08-03 → 2028-01-20 (+170d) | 2027-09-20 → 2028-03-08 (+170d) |  |  |  |  |
| CON-LEG101-RA-1320 | Installation of Electrical Solenoid Valve [Roundabout : 03 ] | 2027-08-03 → 2028-01-20 (+170d) | 2027-08-08 → 2028-01-25 (+170d) |  | 0d → -145d |  |  |
| CON-LEG101-RA-1350 | Installation of quick coupler valve [Roundabout : 03 ] | 2027-08-09 → 2028-01-26 (+170d) | 2027-08-14 → 2028-01-31 (+170d) |  | 0d → -145d |  |  |
| CON-LEG101-RA-1380 | Installation of a Flush valve [Roundabout : 03 ] | 2027-08-15 → 2028-02-01 (+170d) | 2027-08-26 → 2028-02-13 (+171d) |  | 0d → -145d |  |  |
| CON-LEG101-RA-1440 | Install single station decoder for valve connection [Roundabout : 03 ] | 2027-08-28 → 2028-02-14 (+170d) | 2027-09-04 → 2028-02-21 (+170d) |  | 0d → -145d |  |  |
| CON-LEG101-RA-1470 | Installation of Decoder cables 12 AWG between valves and controllers [Roundabout : 03 ] | 2027-09-05 → 2028-02-22 (+170d) | 2027-09-20 → 2028-03-08 (+170d) |  | 0d → -145d |  | resources Supply and installation of Decoder cables 12 AWG between valves and controllers, The cables shall be pulled through 32Ø UPVC conduit and inspection 10" round valve box every 100 meters, as per standard specification and drawings [432.15]; Excavator [96 h]; Labor [200 h]; Skilled Labor [100 h]; Eq. Operator [100 h]; Pipe Fitter [100 h] → Supply and installation of Decoder cables 12 AWG between valves and controllers, The cables shall be pulled through 32? UPVC conduit and inspection 10" round valve box every 100 meters, as per standard specification and drawings [432.15]; Excavator [96 h]; Labor [200 h]; Skilled Labor [100 h]; Eq. Operator [100 h]; Pipe Fitter [100 h] |
| 3 | **Curbs and edging** | 2027-09-21 → 2028-03-09 (+170d) | 2027-09-25 → 2028-03-12 (+169d) |  |  |  |  |
| CON-LEG101-RA-1110 | Installation of Curbs and edging [Roundabout : 03 ] | 2027-09-21 → 2028-03-09 (+170d) | 2027-09-25 → 2028-03-12 (+169d) |  | 0d → -145d |  |  |
| 2 | **Landscape** | 2027-09-26 → 2028-03-13 (+169d) | 2027-10-18 → 2028-04-04 (+169d) |  |  |  |  |
| CON-LEG101-RA-1020 | Site preparation for Planting Area [Roundabout : 03 ] | 2027-09-26 → 2028-03-13 (+169d) | 2027-10-03 → 2028-03-20 (+169d) |  | 0d → -145d |  |  |
| CON-LEG101-RA-1050 | Placing Agricutural Soil [Roundabout : 03 ] | 2027-10-04 → 2028-03-21 (+169d) | 2027-10-10 → 2028-03-27 (+169d) |  | 0d → -145d |  |  |
| CON-LEG101-RA-1080 | Planting Shrubs And Ground Cover [Roundabout : 03 ] | 2027-10-11 → 2028-03-28 (+169d) | 2027-10-18 → 2028-04-04 (+169d) |  | 0d → -145d |  |  |
| 6 | **Testing & Commissioning** | 2027-08-04 → 2026-06-15 (-415d) | 2027-10-26 → 2028-04-12 (+169d) |  |  |  |  |
| CON-LEG101-TC-1020 | Test for Public Water Utility Distribution | 2027-08-14 → 2026-06-15 A (-425d) | 2027-08-22 → 2027-11-29 (+99d) | 0% → 80% | 0d → -71d |  |  |
| CON-LEG101-TC-1030 | Test for TSE Network | 2027-09-20 → 2026-06-15 A (-462d) | 2027-09-28 → 2027-12-13 (+76d) | 0% → 80% | 0d → -62.4d |  |  |
| CON-LEG101-TC-1040 | Test for Sanitary Sewerage | 2027-08-14 → 2026-06-15 A (-425d) | 2027-08-22 → 2027-11-30 (+100d) | 0% → 75% | 0d → -67.4d |  |  |
| CON-LEG101-TC-1050 | Test for Stormwater Utilities | 2027-08-23 → 2026-06-15 A (-434d) | 2027-08-31 → 2027-12-02 (+93d) | 0% → 75% | 0d → -67.4d |  |  |
| CON-LEG101-TC-1060 | Test for Bridge Work | 2027-09-01 → 2026-06-15 A (-443d) | 2027-09-09 → 2027-12-06 (+88d) | 0% → 65% | 0d → -62.4d |  |  |
| CON-LEG101-TC-1080 | Test for Fence & Gate | 2027-10-19 → 2026-06-15 A (-491d) | 2027-10-25 → 2027-11-23 (+29d) | 0% → 60% | 0d → -24.2d |  |  |
| CON-LEG101-TC-1000 | Test for Telecommunications Work | 2027-10-06 → 2026-08-01 A (-431d) | 2027-10-12 → 2027-12-22 (+71d) | 0% → 30% | 0d → -58.8d |  |  |
| CON-LEG101-TC-1010 | Test for Electrical Network | 2027-09-11 → 2026-08-01 A (-406d) | 2027-09-19 → 2027-12-11 (+83d) | 0% → 40% | 0d → -62.4d |  |  |
| CON-LEG101-TC-1070 | Test for CCTV feeding system and GSM | 2027-10-13 → 2026-08-01 A (-438d) | 2027-10-19 → 2027-12-27 (+69d) | 0% → 35% | 0d → -56.9d |  |  |
| CON-LEG101-TC-1100 | Test for Road Lighting | 2027-09-29 → 2026-08-01 A (-424d) | 2027-10-05 → 2027-12-18 (+74d) | 0% → 30% | 0d → -58.8d |  |  |
| CON-LEG101-TC-1110 | Test for Road Works | 2027-08-04 → 2026-08-01 A (-368d) | 2027-08-12 → 2027-11-28 (+108d) | 0% → 70% | 0d → -79.4d |  |  |
| CON-LEG101-TC-1120 | Test for Earthing System | 2027-10-20 → 2026-08-01 A (-445d) | 2027-10-26 → 2028-01-01 (+67d) | 0% → 30% | 0d → -56.9d |  |  |
| CON-LEG101-TC-1090 | Test for Irrigation and Landscape | 2027-10-19 → 2028-04-05 (+169d) | 2027-10-26 → 2028-04-12 (+169d) |  | 0d → -145d | CON-LEG101-TC-1000 SS, CON-LEG101-LR-5410, CON-LEG101-LR-5520, CON-LEG101-LR-4790, CON-LEG101-LR-4720, CON-LEG101-LR-5420, CON-LEG101-LR-5530, CON-LEG101-LR-4800, CON-LEG101-LR-4730, CON-LEG101-LR-5430, CON-LEG101-LR-5540, CON-LEG101-LR-4810, CON-LEG101-LR-4740, CON-LEG101-LR-5440, CON-LEG101-LR-5550, CON-LEG101-LR-4830, CON-LEG101-LR-4750, CON-LEG101-LR-5450, CON-LEG101-LR-5560, CON-LEG101-LR-4840, CON-LEG101-LR-4760, CON-LEG101-LR-5460, CON-LEG101-LR-5570, CON-LEG101-LR-4850, CON-LEG101-LR-4770, CON-LEG101-RA-1390, Installation of Decoder cables 12 AWG between valves and controllers [Roundabout : 01 ], CON-LEG101-RA-1090, CON-LEG101-RA-1060, CON-LEG101-RA-1400, CON-LEG101-RA-1460, CON-LEG101-RA-1100, CON-LEG101-RA-1070, CON-LEG101-RA-1410, CON-LEG101-RA-1470, CON-LEG101-RA-1110, CON-LEG101-RA-1080, CON-LEG101-MS-1030 → CON-LEG101-TC-1000 SS, CON-LEG101-LR-5410, CON-LEG101-LR-5520, CON-LEG101-LR-4790, CON-LEG101-LR-4720, CON-LEG101-LR-5420, CON-LEG101-LR-5530, CON-LEG101-LR-4800, CON-LEG101-LR-4730, CON-LEG101-LR-5430, CON-LEG101-LR-5540, CON-LEG101-LR-4810, CON-LEG101-LR-4740, CON-LEG101-LR-5440, CON-LEG101-LR-5550, CON-LEG101-LR-4830, CON-LEG101-LR-4750, CON-LEG101-LR-5450, CON-LEG101-LR-5560, CON-LEG101-LR-4840, CON-LEG101-LR-4760, CON-LEG101-LR-5460, CON-LEG101-LR-5570, CON-LEG101-LR-4850, CON-LEG101-LR-4770, CON-LEG101-RA-1390, A, CON-LEG101-RA-1090, CON-LEG101-RA-1060, CON-LEG101-RA-1400, CON-LEG101-RA-1460, CON-LEG101-RA-1100, CON-LEG101-RA-1070, CON-LEG101-RA-1410, CON-LEG101-RA-1470, CON-LEG101-RA-1110, CON-LEG101-RA-1080, CON-LEG101-MS-1030 | resources Ref. SH-01, Golden daisy bush euryops pectinatus [911.5]; Planting curb edge, size 500 x 250 x 100 mm. [34]; Pipe line O.D 50 mm PN 10, in depth 0 to 1.5 m [20]; Pipe line O.D 32 mm PN 10, in depth 0 to 1.5 m [12]; Pipe line O.D 25 mm PN 10, in depth 0 to 1.5 m [103]; Supply and installation of Electrical Solenoid Valve ( 1") inside PVC box with all accessories( pressure regulator module, manual bleeding, expedient for TSE water, in line filter, manual valve, valve box with cover, and all other accessories necessary to [0.5]; Supply and installation of Electrical Solenoid Valve ( 1.5") inside PVC box with all accessories( pressure regulator module, manual bleeding, expedient for TSE water, in line filter, manual valve, valve box with cover, and all other accessories necessary [0.3]; Supply and installation of 1" quick coupler valve inside PVC box [0.8]; "Supply and installation of a flush valve at the end of ½-inch drip irrigation lines, including all necessary accessories such as protective box and fittings, to complete the work as required and in accordance with the supervising engineer’s instructions. [5]; Supply and installation of 16 mm dia (O.D.) linear low density polyethylene tubing including in line P.C. emitters, accessories, stakes, takeoff /risers connections from laterals, and all requirements needed to finish work as per drawings (In line dripper [2734.5]; Supply and installation of Advanced Irrigation controller subject to client approval, can connect with Centarl Control system and cabable to integrate with Smart City systems,BMS or Scada system ,Can record the real flow rate per stations, [0.1]; Supply and install single station decoder for valve connection to field controller including waterproof connectors and all other accessories necessary to complete the works in accordance with specifications and drawings (Decoder Single station ). [0.8]; Supply and installation of Decoder cables 12 AWG between valves and controllers, The cables shall be pulled through 32Ø UPVC conduit and inspection 10" round valve box every 100 meters, as per standard specification and drawings [322.5]; Engineer & Technician [1570 h] → Ref. SH-01, Golden daisy bush euryops pectinatus [911.5]; Planting curb edge, size 500 x 250 x 100 mm. [34]; Pipe line O.D 50 mm PN 10, in depth 0 to 1.5 m [20]; Pipe line O.D 32 mm PN 10, in depth 0 to 1.5 m [12]; Pipe line O.D 25 mm PN 10, in depth 0 to 1.5 m [103]; Supply and installation of Electrical Solenoid Valve ( 1") inside PVC box with all accessories( pressure regulator module, manual bleeding, expedient for TSE water, in line filter, manual valve, valve box with cover, and all other accessories necessary to [0.5]; Supply and installation of Electrical Solenoid Valve ( 1.5") inside PVC box with all accessories( pressure regulator module, manual bleeding, expedient for TSE water, in line filter, manual valve, valve box with cover, and all other accessories necessary [0.3]; Supply and installation of 1" quick coupler valve inside PVC box [0.8]; "Supply and installation of a flush valve at the end of ½-inch drip irrigation lines, including all necessary accessories such as protective box and fittings, to complete the work as required and in accordance with the supervising engineer’s instructions. [5]; Supply and installation of 16 mm dia (O.D.) linear low density polyethylene tubing including in line P.C. emitters, accessories, stakes, takeoff /risers connections from laterals, and all requirements needed to finish work as per drawings (In line dripper [2734.5]; Supply and installation of Advanced Irrigation controller subject to client approval, can connect with Centarl Control system and cabable to integrate with Smart City systems,BMS or Scada system ,Can record the real flow rate per stations, [0.1]; Supply and install single station decoder for valve connection to field controller including waterproof connectors and all other accessories necessary to complete the works in accordance with specifications and drawings (Decoder Single station ). [0.8]; Supply and installation of Decoder cables 12 AWG between valves and controllers, The cables shall be pulled through 32? UPVC conduit and inspection 10" round valve box every 100 meters, as per standard specification and drawings [322.5]; Engineer & Technician [1570 h] |
| 7 | **Project Close-out** | 2027-08-14 → 2027-11-23 (+101d) | 2027-11-18 → 2028-05-06 (+170d) |  |  |  |  |
| 1 | **As-Built DWGs** | 2027-08-14 → 2027-11-23 (+101d) | 2027-11-07 → 2028-04-24 (+169d) |  |  |  |  |
| 1 | **As-Built DWGs Submittal** | 2027-08-14 → 2027-11-23 (+101d) | 2027-11-01 → 2028-04-18 (+169d) |  |  |  |  |
| CON-LEG101-ABS-1080 | As-Built DWGs Submittal for Fence & Gate | 2027-10-26 → 2027-11-23 (+28d) | 2027-11-01 → 2027-11-30 (+29d) |  | 0d → -24.2d |  |  |
| CON-LEG101-ABS-1110 | As-Built DWGs Submittal for Road Works | 2027-08-14 → 2027-11-28 (+106d) | 2027-08-26 → 2027-12-12 (+108d) |  | 11d → -79.4d |  |  |
| CON-LEG101-ABS-1020 | As-Built DWGs Submittal for Public Water Utility Distribution | 2027-08-23 → 2027-11-30 (+99d) | 2027-09-05 → 2027-12-13 (+99d) |  | 13d → -71d |  |  |
| CON-LEG101-ABS-1050 | As-Built DWGs Submittal for Stormwater Utilities | 2027-09-01 → 2027-12-02 (+92d) | 2027-09-14 → 2027-12-16 (+93d) |  | 11d → -67.4d |  |  |
| CON-LEG101-ABS-1060 | As-Built DWGs Submittal for Bridge Work | 2027-09-11 → 2027-12-06 (+86d) | 2027-09-25 → 2027-12-20 (+86d) |  | 17d → -56.2d |  |  |
| CON-LEG101-ABS-1030 | As-Built DWGs Submittal for TSE Network | 2027-09-29 → 2027-12-13 (+75d) | 2027-10-12 → 2027-12-27 (+76d) |  | 2d → -62.4d |  |  |
| CON-LEG101-ABS-1040 | As-Built DWGs Submittal for Sanitary Sewerage | 2027-09-15 → 2027-12-16 (+92d) | 2027-09-29 → 2027-12-30 (+92d) |  | 11d → -67.4d |  |  |
| CON-LEG101-ABS-1100 | As-Built DWGs Submittal for Road Lighting | 2027-10-06 → 2027-12-18 (+73d) | 2027-10-19 → 2028-01-01 (+74d) |  | 6d → -56.6d |  |  |
| CON-LEG101-ABS-1000 | As-Built DWGs Submittal for Telecommunications Work | 2027-10-13 → 2027-12-22 (+70d) | 2027-10-26 → 2028-01-05 (+71d) |  | 2d → -58.8d |  |  |
| CON-LEG101-ABS-1070 | As-Built DWGs Submittal for CCTV feeding system and GSM | 2027-10-20 → 2027-12-27 (+68d) | 2027-10-28 → 2028-01-05 (+69d) |  | 3d → -55.7d |  |  |
| CON-LEG101-ABS-1010 | As-Built DWGs Submittal for Electrical Network | 2027-09-30 → 2027-12-30 (+91d) | 2027-10-13 → 2028-01-13 (+92d) |  | 11d → -67.4d |  |  |
| CON-LEG101-ABS-1120 | As-Built DWGs Submittal for Earthing System | 2027-10-27 → 2028-01-01 (+66d) | 2027-11-01 → 2028-01-06 (+66d) |  | 0d → -56.9d |  |  |
| CON-LEG101-ABS-1090 | As-Built DWGs Submittal for Irrigation and Landscape | 2027-10-27 → 2028-04-13 (+169d) | 2027-11-01 → 2028-04-18 (+169d) |  | 0d → -145d |  |  |
| 2 | **As-Built DWGs Approval** | 2027-08-28 → 2027-11-30 (+94d) | 2027-11-07 → 2028-04-24 (+169d) |  |  |  |  |
| CON-LEG101-ABA-1080 | As- Built DWGs Approval for Fence & Gate | 2027-11-02 → 2027-11-30 (+28d) | 2027-11-07 → 2027-12-06 (+29d) |  | 0d → -24.2d |  |  |
| CON-LEG101-ABA-1110 | As- Built DWGs Approval for Road Works | 2027-08-28 → 2027-12-12 (+106d) | 2027-09-07 → 2027-12-23 (+107d) |  | 11d → -79.4d |  |  |
| CON-LEG101-ABA-1020 | As- Built DWGs Approval for Public Water Utility Distribution | 2027-09-08 → 2027-12-23 (+106d) | 2027-09-19 → 2028-01-04 (+107d) |  | 11d → -79.4d |  |  |
| CON-LEG101-ABA-1030 | As- Built DWGs Approval for TSE Network | 2027-10-13 → 2027-12-27 (+75d) | 2027-10-24 → 2028-01-08 (+76d) |  | 2d → -62.4d |  |  |
| CON-LEG101-ABA-1100 | As- Built DWGs Approval for Road Lighting | 2027-10-20 → 2028-01-01 (+73d) | 2027-10-31 → 2028-01-12 (+73d) |  | 6d → -56.6d |  |  |
| CON-LEG101-ABA-1050 | As- Built DWGs Approval for Stormwater Utilities | 2027-09-20 → 2028-01-04 (+106d) | 2027-10-02 → 2028-01-16 (+106d) |  | 11d → -79.4d |  |  |
| CON-LEG101-ABA-1070 | As- Built DWGs Approval for CCTV feeding system and GSM | 2027-10-30 → 2028-01-05 (+67d) | 2027-11-03 → 2028-01-11 (+69d) |  | 3d → -55.7d |  |  |
| CON-LEG101-ABA-1000 | As- Built DWGs Approval for Telecommunications Work | 2027-10-27 → 2028-01-05 (+70d) | 2027-11-04 → 2028-01-15 (+72d) |  | 2d → -58.8d |  |  |
| CON-LEG101-ABA-1120 | As- Built DWGs Approval for Earthing System | 2027-11-02 → 2028-01-06 (+65d) | 2027-11-07 → 2028-01-12 (+66d) |  | 0d → -56.9d |  |  |
| CON-LEG101-ABA-1060 | As- Built DWGs Approval for Bridge Work | 2027-10-03 → 2028-01-16 (+105d) | 2027-10-13 → 2028-01-27 (+106d) |  | 11d → -79.4d |  |  |
| CON-LEG101-ABA-1010 | As- Built DWGs Approval for Electrical Network | 2027-10-25 → 2028-01-27 (+94d) | 2027-11-04 → 2028-02-08 (+96d) |  | 2d → -79.4d |  |  |

| ID | Task | Start | Finish | Total float |
| --- | --- | --- | --- | --- |
| CON-LEG101-ABA-1040 | As- Built DWGs Approval for Sanitary Sewerage | 2027-10-25 → 2028-01-27 (+94d) | 2027-11-04 → 2028-02-08 (+96d) | 2d → -79.4d |
| CON-LEG101-ABA-1090 | As- Built DWGs Approval for Irrigation and Landscape | 2027-11-02 → 2028-04-19 (+169d) | 2027-11-07 → 2028-04-24 (+169d) | 0d → -145d |
| 2 | **Demobilization** | 2027-11-08 → 2028-04-25 (+169d) | 2027-11-18 → 2028-05-06 (+170d) |  |
| CON-LEG101-DM-1000 | Demobilization of Manpower | 2027-11-08 → 2028-04-25 (+169d) | 2027-11-13 → 2028-04-30 (+169d) | 0d → -145d |
| CON-LEG101-DM-1010 | Removal of Equipment from Site | 2027-11-08 → 2028-04-25 (+169d) | 2027-11-13 → 2028-04-30 (+169d) | 0d → -145d |
| CON-LEG101-DM-1020 | Site Clean Up | 2027-11-08 → 2028-04-25 (+169d) | 2027-11-13 → 2028-04-30 (+169d) | 0d → -145d |
| CON-LEG101-DM-1030 | Removal of Site Offices and Structures | 2027-11-08 → 2028-04-25 (+169d) | 2027-11-13 → 2028-04-30 (+169d) | 0d → -145d |
| CON-LEG101-DM-1040 | Restoration of Ground Surfaces | 2027-11-14 → 2028-05-01 (+169d) | 2027-11-18 → 2028-05-06 (+170d) | 0d → -145d |

## Version 3 (data date 2026-10-13, saved 2026-10-13, file 02. JDH1-02-003 -ENJ-WPR-047-13-10-2026 Update Schedule.xer)

Last finish 2028-05-06 → 2028-05-13 (+7d). Complete tasks 1243 → 1250.

Changed:

| ID | Task | Start | Finish | Complete | Total float |
| --- | --- | --- | --- | --- | --- |
| 5 | **Milestones** |  | 2028-05-06 → 2028-05-13 (+7d) |  |  |
| 1 | **Key Milestones** |  | 2028-05-06 → 2028-05-13 (+7d) |  |  |
| CON-LEG101-MS-1000 | Project Completion Date | 2028-05-06 → 2028-05-13 (+7d) | 2028-05-06 → 2028-05-13 (+7d) |  | -145d → -151d |
| 2 | **Contractual Milestone** |  | 2028-05-06 → 2028-05-13 (+7d) |  |  |
| 4 | **Engineering** | 2026-10-24 → 2026-10-31 (+7d) | 2026-10-24 → 2026-10-31 (+7d) |  |  |
| CON-LEG101-MS-1060 | Finish Submission and Approval for Shop Drawings, Method of Statement, Prequalification and Materials | 2026-10-24 → 2026-10-31 (+7d) | 2026-10-24 → 2026-10-31 (+7d) |  | -43d → -49d |
| 1 | **Procurement** | 2026-10-18 → 2026-10-25 (+7d) | 2026-10-18 → 2026-10-25 (+7d) |  |  |
| CON-LEG101-MS-1100 | Finish PO for Short Lead Item & Long Lead Item | 2026-10-18 → 2026-10-25 (+7d) | 2026-10-18 → 2026-10-25 (+7d) |  | -37.2d → -43.2d |
| 5 | **Construction** | 2027-01-04 → 2027-01-11 (+7d) | 2028-05-06 → 2028-05-13 (+7d) |  |  |
| CON-LEG101-MS-1130 | Completion of Deep infrastructure network | 2027-01-04 → 2027-01-11 (+7d) | 2027-01-04 → 2027-01-11 (+7d) |  | 53.95d → 48.85d |
| CON-LEG101-MS-1120 | Completion of Roads & Meduim Voltage | 2027-06-05 → 2027-06-12 (+7d) | 2027-06-05 → 2027-06-12 (+7d) |  | -96.2d → -109.15d |
| CON-LEG101-MS-1140 | Completion of Shallow infrastructure network | 2027-09-18 → 2027-09-26 (+8d) | 2027-09-18 → 2027-09-26 (+8d) |  | -37.6d → -36d |
| CON-LEG101-MS-1150 | Completion all Works | 2028-05-06 → 2028-05-13 (+7d) | 2028-05-06 → 2028-05-13 (+7d) |  | -145d → -151d |
| 6 | **Monitoring and Control Milestone** | 2027-06-06 → 2027-06-13 (+7d) | 2028-04-04 → 2028-04-11 (+7d) |  |  |
| CON-LEG101-MS-1050 | Completion of Outside Boundary Area's Scope (Tie-in Lines) | 2027-06-06 → 2027-06-13 (+7d) | 2027-06-06 → 2027-06-13 (+7d) |  | 35.18d → 29.18d |
| CON-LEG101-MS-1020 | Completion of Bridge | 2027-08-15 → 2027-08-22 (+7d) | 2027-08-15 → 2027-08-22 (+7d) |  | -55.2d → -61.2d |
| CON-LEG101-MS-1040 | Completion of Fence and Gate | 2027-11-20 → 2027-11-27 (+7d) | 2027-11-20 → 2027-11-27 (+7d) |  | -24.2d → -30.2d |
| CON-LEG101-MS-1010 | Completion of Roads Finishing | 2027-11-24 → 2027-12-01 (+7d) | 2027-11-24 → 2027-12-01 (+7d) |  | -79.4d → -85.4d |
| CON-LEG101-MS-1030 | Completion of Roundabout & Landscape works | 2028-04-04 → 2028-04-11 (+7d) | 2028-04-04 → 2028-04-11 (+7d) |  | -145d → -151d |
| 3 | **Engineering** |  | 2026-10-24 → 2026-10-31 (+7d) |  |  |
| 2 | **Shop Drawings** |  | 2026-10-24 → 2026-10-31 (+7d) |  |  |
| 1 | **Shop Drawings Submittal** |  | 2026-10-17 → 2026-10-24 (+7d) |  |  |
| 2 | **Shop Drawings Submittal for Electrical Network** |  | 2026-10-17 → 2026-10-24 (+7d) |  |  |
| CON-LEG101-EN-1390 | Shop DWG Submittal for Medium Voltage Network | 2026-10-07 → 2026-10-14 (+7d) | 2026-10-17 → 2026-10-24 (+7d) |  | -43d → -49d |
| 2 | **Shop Drawings Approval** |  | 2026-10-24 → 2026-10-31 (+7d) |  |  |
| 2 | **Shop Drawings Approval for Electrical Network** |  | 2026-10-24 → 2026-10-31 (+7d) |  |  |
| CON-LEG101-EN-1660 | Shop DWG Approval for Medium Voltage Network | 2026-10-18 → 2026-10-25 (+7d) | 2026-10-24 → 2026-10-31 (+7d) |  | -43d → -49d |
| 4 | **Pre-qualification and Material** |  | 2026-10-12 → 2026-10-19 (+7d) |  |  |
| 4 | **Electrical Network** |  | 2026-10-12 → 2026-10-19 (+7d) |  |  |
| 13 | **Ring Main Unit** |  | 2026-10-12 → 2026-10-19 (+7d) |  |  |
| CON-LEG101-SB-1710 | Pre-qualification and Material Approval for Ring Main Unit |  | 2026-10-12 → 2026-10-19 (+7d) |  | -37.2d → -43.2d |
| 14 | **Street Lighting Sub-station** |  | 2026-10-12 → 2026-10-19 (+7d) |  |  |
| CON-LEG101-SB-1750 | Pre-qualification and Material Approval for Street Lighting Sub-station |  | 2026-10-12 → 2026-10-19 (+7d) |  | -32.2d → -38.2d |
| 4 | **Procurement** |  | 2027-09-07 → 2027-09-14 (+7d) |  |  |
| 2 | **Short Lead Item** |  | 2027-08-09 → 2027-08-14 (+5d) |  |  |
| 1 | **Road Works - Civil** |  | 2027-08-09 → 2027-08-14 (+5d) |  |  |
| 9 | **Pavement Markings** |  | 2027-08-09 → 2027-08-14 (+5d) |  |  |
| CON-LEG101-PR-1600 | Material Delivery for Pavement Markings | 2027-07-18 → 2027-07-22 (+4d) | 2027-08-04 → 2027-08-09 (+5d) |  | -69.2d → -73.45d |
| CON-LEG101-PR-2070 | Staging Time for Pavement Markings | 2027-08-04 → 2027-08-09 (+5d) | 2027-08-09 → 2027-08-14 (+5d) |  | -69.2d → -73.45d |
| 6 | **Bituminous Base & Wearing Course** |  | 2027-08-01 → 2027-08-04 (+3d) |  |  |
| CON-LEG101-PR-1530 | Material Delivery for Wearing Course |  | 2027-08-01 → 2027-08-04 (+3d) | 40% → 47% | -69.2d → -73.45d |
| 1 | **Long Lead Item** |  | 2027-09-07 → 2027-09-14 (+7d) |  |  |
| 10 | **Fence & Gates** |  | 2027-01-09 → 2027-01-16 (+7d) |  |  |
| 2 | **Gates** |  | 2027-01-09 → 2027-01-16 (+7d) |  |  |
| CON-LEG101-PR-2040 | Material Fabrication for Gates |  | 2026-12-10 → 2026-12-17 (+7d) |  | -8.3d → -21.65d |
| CON-LEG101-PR-2050 | Material Delivery for Gates | 2026-12-12 → 2026-12-19 (+7d) | 2026-12-28 → 2027-01-04 (+7d) |  | -8.3d → -21.65d |
| CON-LEG101-PR-2090 | Staging Time for Gates | 2026-12-29 → 2027-01-05 (+7d) | 2027-01-09 → 2027-01-16 (+7d) |  | -8.3d → -21.65d |
| 1 | **Electrical Network** |  | 2027-05-29 → 2027-06-05 (+7d) |  |  |
| 12 | **Cable Termination & Joints** |  | 2027-03-09 → 2027-03-16 (+7d) |  |  |
| CON-LEG101-PR-1240 | PO for Cable Termination & Joints |  | 2026-10-12 → 2026-10-19 (+7d) |  | -113d → -119d |
| CON-LEG101-PR-1270 | Material Fabrication for Cable Termination & Joints | 2026-10-13 → 2026-10-20 (+7d) | 2027-01-25 → 2027-02-01 (+7d) |  | -113d → -119d |
| CON-LEG101-PR-1300 | Material Delivery for Cable Termination & Joints | 2027-01-26 → 2027-02-02 (+7d) | 2027-02-16 → 2027-02-24 (+8d) |  | -113d → -119d |
| CON-LEG101-PR-1450 | Stagging Time for Cable Termination & Joints | 2027-02-27 → 2027-03-06 (+7d) | 2027-03-09 → 2027-03-16 (+7d) |  | -120d → -126d |
| 1 | **Medium Voltage Cable** |  | 2027-02-25 → 2027-03-04 (+7d) |  |  |
| CON-LEG101-PR-1000 | PO for Medium Voltage Cable |  | 2026-10-12 → 2026-10-19 (+7d) |  | -128d → -134d |
| CON-LEG101-PR-1080 | Material Fabrication for Medium Voltage Cable | 2026-11-02 → 2026-11-09 (+7d) | 2027-01-10 → 2027-01-17 (+7d) |  | -145d → -151d |
| CON-LEG101-PR-1160 | Material Delivery for Medium Voltage Cable | 2027-01-17 → 2027-01-24 (+7d) | 2027-02-02 → 2027-02-14 (+12d) |  | -145d → -151d |
| CON-LEG101-PR-1880 | Staging Time for Medium Voltage Cable | 2027-02-03 → 2027-02-15 (+12d) | 2027-02-25 → 2027-03-04 (+7d) |  | -145d → -151d |
| 4 | **Street Lighting Sub-station** |  | 2027-04-25 → 2027-05-02 (+7d) |  |  |
| CON-LEG101-PR-1090 | Material Fabrication for Street Lighting Sub-station | 2027-01-11 → 2027-01-18 (+7d) | 2027-03-27 → 2027-04-03 (+7d) |  | -94.3d → -107.65d |
| CON-LEG101-PR-1170 | Material Delivery for Street Lighting Sub-station | 2027-03-28 → 2027-04-04 (+7d) | 2027-04-13 → 2027-04-20 (+7d) |  | -94.3d → -107.65d |
| CON-LEG101-PR-1890 | Staging Time for Street Lighting Sub-station | 2027-04-14 → 2027-04-21 (+7d) | 2027-04-25 → 2027-05-02 (+7d) |  | -94.3d → -107.65d |
| 2 | **Ring Main Unit** | 2026-10-12 → 2026-10-19 (+7d) | 2027-05-29 → 2027-06-05 (+7d) |  |  |
| CON-LEG101-PR-2480 | PO for Ring Main Unit | 2026-10-12 → 2026-10-19 (+7d) | 2026-10-18 → 2026-10-25 (+7d) |  | -37.2d → -43.2d |
| CON-LEG101-PR-2490 | Material Fabrication for Ring Main Unit | 2026-12-30 → 2027-01-06 (+7d) | 2027-03-27 → 2027-04-03 (+7d) |  | -69.3d → -82.65d |
| CON-LEG101-PR-2500 | Material Delivery for Ring Main Unit | 2027-04-26 → 2027-05-03 (+7d) | 2027-05-12 → 2027-05-24 (+12d) |  | -94.3d → -107.65d |
| CON-LEG101-PR-2510 | Staging Time for Ring Main Unit | 2027-05-13 → 2027-05-25 (+12d) | 2027-05-29 → 2027-06-05 (+7d) |  | -94.3d → -107.65d |
| 6 | **Landscape Works** |  | 2027-09-07 → 2027-09-14 (+7d) |  |  |
| 4 | **Electrical Solenoid Valve** |  | 2027-01-21 → 2027-01-28 (+7d) |  |  |
| CON-LEG101-PR-2900 | Material Fabrication for Electrical Solenoid Valve |  | 2026-11-03 → 2026-11-10 (+7d) |  | 62d → 56d |

| ID | Task | Start | Finish | Total float |
| --- | --- | --- | --- | --- |
| CON-LEG101-PR-2960 | Material Delivery for Electrical Solenoid Valve | 2026-11-04 → 2026-11-11 (+7d) | 2026-11-15 → 2026-11-22 (+7d) | 62d → 56d |
| CON-LEG101-PR-3020 | Staging Time for Electrical Solenoid Valve | 2027-01-11 → 2027-01-18 (+7d) | 2027-01-21 → 2027-01-28 (+7d) | 14d → 8d |
| 5 | **Quick coupler valve** |  | 2027-02-07 → 2027-02-18 (+11d) |  |
| CON-LEG101-PR-2910 | Material Fabrication for Quick coupler valve |  | 2026-11-03 → 2026-11-10 (+7d) | 82d → 76d |
| CON-LEG101-PR-2970 | Material Delivery for Quick coupler valve | 2027-01-23 → 2027-01-30 (+7d) | 2027-01-30 → 2027-02-06 (+7d) | 14d → 8d |
| CON-LEG101-PR-3030 | Staging Time for Quick coupler valve | 2027-01-31 → 2027-02-07 (+7d) | 2027-02-07 → 2027-02-18 (+11d) | 14d → 8d |
| 2 | **Flush valve** |  | 2027-03-08 → 2027-03-15 (+7d) |  |
| CON-LEG101-PR-3090 | Material Fabrication for Flush valve |  | 2026-11-03 → 2026-11-10 (+7d) | 96d → 90d |
| CON-LEG101-PR-3100 | Material Delivery for Flush valve | 2027-02-08 → 2027-02-20 (+12d) | 2027-02-24 → 2027-03-03 (+7d) | 14d → 8d |
| CON-LEG101-PR-3110 | Staging Time for Flush valve | 2027-02-25 → 2027-03-04 (+7d) | 2027-03-08 → 2027-03-15 (+7d) | 14d → 8d |
| 6 | **Irrigation controller** |  | 2027-03-31 → 2027-04-07 (+7d) |  |
| CON-LEG101-PR-2920 | Material Fabrication for Irrigation controller |  | 2026-11-03 → 2026-11-10 (+7d) | 106d → 100d |
| CON-LEG101-PR-2980 | Material Delivery for Irrigation controller | 2027-03-09 → 2027-03-16 (+7d) | 2027-03-20 → 2027-03-27 (+7d) | 14d → 8d |
| CON-LEG101-PR-3040 | Staging Time for Irrigation controller | 2027-03-21 → 2027-03-28 (+7d) | 2027-03-31 → 2027-04-07 (+7d) | 14d → 8d |
| 3 | **Decoder for valve** |  | 2027-04-27 → 2027-05-04 (+7d) |  |
| CON-LEG101-PR-3130 | Material Fabrication for Decoder for valve |  | 2026-11-03 → 2026-11-10 (+7d) | 106d → 100d |
| CON-LEG101-PR-3140 | Material Delivery for Decoder for valve | 2027-04-01 → 2027-04-08 (+7d) | 2027-04-15 → 2027-04-22 (+7d) | 14d → 8d |
| CON-LEG101-PR-3150 | Staging Time for Decoder for valve | 2027-04-17 → 2027-04-24 (+7d) | 2027-04-27 → 2027-05-04 (+7d) | 14d → 8d |
| 7 | **Decoder Cables** |  | 2027-05-09 → 2027-05-20 (+11d) |  |
| CON-LEG101-PR-2930 | Material Fabrication for Decoder Cables |  | 2026-11-03 → 2026-11-10 (+7d) | 106d → 100d |
| CON-LEG101-PR-2990 | Material Delivery for Decoder Cables | 2026-11-04 → 2026-11-11 (+7d) | 2026-11-15 → 2026-11-22 (+7d) | 106d → 100d |
| CON-LEG101-PR-3050 | Staging Time for Decoder Cables | 2027-04-28 → 2027-05-05 (+7d) | 2027-05-09 → 2027-05-20 (+11d) | 14d → 8d |
| 8 | **Shrubs And Ground Cover** |  | 2027-09-07 → 2027-09-14 (+7d) |  |
| CON-LEG101-PR-3000 | Material Delivery for agricultural soil | 2027-05-10 → 2027-05-22 (+12d) | 2027-08-26 → 2027-09-02 (+7d) | 14d → 8d |
| CON-LEG101-PR-3060 | Staging Time for agricultural soil | 2027-08-28 → 2027-09-04 (+7d) | 2027-09-07 → 2027-09-14 (+7d) | 14d → 8d |
| 4 | **Bridge Works** |  | 2027-04-22 → 2027-04-29 (+7d) |  |
| 1 | **Guard Rail** |  | 2027-03-20 → 2027-03-27 (+7d) |  |
| CON-LEG101-PR-2270 | Material Fabrication for Guard Rail |  | 2026-10-24 → 2026-10-31 (+7d) | 108d → 102d |
| CON-LEG101-PR-2280 | Material Delivery for Guard Rail | 2026-10-25 → 2026-11-01 (+7d) | 2026-11-10 → 2026-11-17 (+7d) | 108d → 102d |
| CON-LEG101-PR-2290 | Staging Time for Guard Rail | 2027-02-25 → 2027-03-04 (+7d) | 2027-03-20 → 2027-03-27 (+7d) | 22d → 16d |
| 5 | **Logo MODON** |  | 2027-04-22 → 2027-04-29 (+7d) |  |
| CON-LEG101-PR-2350 | Material Fabrication for Logo MODON |  | 2026-11-10 → 2026-11-17 (+7d) | 119d → 113d |
| CON-LEG101-PR-2360 | Material Delivery for Logo MODON | 2027-03-21 → 2027-03-28 (+7d) | 2027-04-11 → 2027-04-18 (+7d) | 28d → 22d |
| CON-LEG101-PR-2430 | Staging Time for Logo MODON | 2027-04-12 → 2027-04-19 (+7d) | 2027-04-22 → 2027-04-29 (+7d) | 28d → 22d |
| 2 | **GRP Panel** |  | 2027-04-18 → 2027-04-25 (+7d) |  |
| CON-LEG101-PR-2310 | Material Fabrication for GRP Panel |  | 2026-11-21 → 2026-11-28 (+7d) | 119d → 113d |
| CON-LEG101-PR-2320 | Material Delivery for GRP Panel | 2027-03-21 → 2027-03-28 (+7d) | 2027-04-06 → 2027-04-13 (+7d) | 22d → 16d |
| CON-LEG101-PR-2330 | Staging Time for GRP Panel | 2027-04-07 → 2027-04-14 (+7d) | 2027-04-18 → 2027-04-25 (+7d) | 22d → 16d |
| 11 | **Irrigation Works** |  | 2027-08-21 → 2027-08-25 (+4d) |  |
| 1 | **Flush valve** |  | 2027-08-21 → 2027-08-25 (+4d) |  |
| CON-LEG101-PR-2680 | Material Fabrication for Flush valve |  | 2026-12-13 → 2026-12-20 (+7d) | 106d → 100d |
| CON-LEG101-PR-2720 | Material Delivery for Flush valve | 2026-12-14 → 2026-12-21 (+7d) | 2027-01-05 → 2027-01-12 (+7d) | 106d → 100d |
| CON-LEG101-PR-2760 | Staging Time for Flush valve | 2027-08-09 → 2027-08-14 (+5d) | 2027-08-21 → 2027-08-25 (+4d) | -69.2d → -73.45d |
| 1 | **Construction** |  | 2028-04-04 → 2028-04-11 (+7d) |  |
| 1 | **Roads & Meduim Voltage** |  | 2027-06-05 → 2027-06-12 (+7d) |  |
| 1 | **Local – 01** |  | 2027-05-19 → 2027-05-26 (+7d) |  |
| 1 | **LOCAL - 01 Segment-01 (From 0+000 to 1+066)** |  | 2027-03-31 → 2027-04-07 (+7d) |  |
| 8 | **Electrical Works** |  | 2027-03-31 → 2027-04-07 (+7d) |  |
| CON-LEG101-LR-15000 | Approval of Subcontractor / Supplier / Consultant for Medium Voltage from SEC | 2026-10-07 → 2026-10-14 (+7d) | 2026-10-18 → 2026-10-25 (+7d) | -145d → -151d |
| CON-LEG101-LR-15010 | Approval Materials of Medium Voltage from SEC | 2026-10-19 → 2026-10-26 (+7d) | 2026-10-29 → 2026-11-05 (+7d) | -145d → -151d |
| CON-LEG101-LR-15030 | PO for Medium Voltage | 2026-10-31 → 2026-11-07 (+7d) | 2026-11-01 → 2026-11-08 (+7d) | -145d → -151d |
| CON-LEG101-LR-15020 | Testing Materials of Medium Voltage from SEC | 2027-01-11 → 2027-01-18 (+7d) | 2027-01-16 → 2027-01-23 (+7d) | -145d → -151d |
| 2 | **Medium Voltage** |  | 2027-03-31 → 2027-04-07 (+7d) |  |
| CON-LEG101-LR-6880 | Excavation for Medium Voltage trench [Local – 01 Segment-01] | 2027-02-27 → 2027-03-06 (+7d) | 2027-03-06 → 2027-03-13 (+7d) | -145d → -151d |
| CON-LEG101-LR-7060 | Installation of Medium Voltage Cables [Local – 01 Segment-01] | 2027-03-07 → 2027-03-14 (+7d) | 2027-03-14 → 2027-03-21 (+7d) | -82.2d → -95.15d |
| CON-LEG101-LR-7150 | Installation of Straight joints cables [Local – 01 Segment-01] | 2027-03-15 → 2027-03-22 (+7d) | 2027-03-16 → 2027-03-23 (+7d) | -82.2d → -95.15d |
| CON-LEG101-LR-7240 | Installation of Cable Termination for 13.8 kv 3Cx 500 mm², Al /XLPE/LLDPE [Local – 01 Segment-01] | 2027-03-17 → 2027-03-24 (+7d) | 2027-03-20 → 2027-03-27 (+7d) | -82.2d → -95.15d |
| CON-LEG101-LR-7330 | Installation of Medium Voltage Switchgears [Local – 01 Segment-01] | 2027-03-21 → 2027-03-28 (+7d) | 2027-03-28 → 2027-04-04 (+7d) | -82.2d → -95.15d |
| CON-LEG101-LR-7680 | Installation of Cable Termination [Local – 01 Segment-01] | 2027-03-29 → 2027-04-05 (+7d) | 2027-03-31 → 2027-04-07 (+7d) | -82.2d → -95.15d |
| 2 | **LOCAL - 01 Segment-02 (From 1+066 to 2+133)** |  | 2027-04-18 → 2027-04-25 (+7d) |  |
| 8 | **Electrical Works** |  | 2027-04-18 → 2027-04-25 (+7d) |  |
| 2 | **Medium Voltage** |  | 2027-04-18 → 2027-04-25 (+7d) |  |
| CON-LEG101-LR-6890 | Excavation for Medium Voltage trench [Local – 01 Segment-02] | 2027-03-07 → 2027-03-14 (+7d) | 2027-03-14 → 2027-03-21 (+7d) | -145d → -151d |
| CON-LEG101-LR-7070 | Installation of Medium Voltage Cables [Local – 01 Segment-02] | 2027-03-15 → 2027-03-22 (+7d) | 2027-03-22 → 2027-03-29 (+7d) | -79.2d → -92.15d |
| CON-LEG101-LR-7160 | Installation of Straight joints cables [Local – 01 Segment-02] | 2027-03-23 → 2027-03-30 (+7d) | 2027-03-28 → 2027-04-04 (+7d) | -79.2d → -92.15d |
| CON-LEG101-LR-7250 | Installation of Cable Termination for 13.8 kv 3Cx 500 mm², Al /XLPE/LLDPE [Local – 01 Segment-02] | 2027-04-01 → 2027-04-08 (+7d) | 2027-04-04 → 2027-04-11 (+7d) | -82.2d → -95.15d |
| CON-LEG101-LR-7340 | Installation of Medium Voltage Switchgears [Local – 01 Segment-02] | 2027-04-05 → 2027-04-12 (+7d) | 2027-04-12 → 2027-04-19 (+7d) | -82.2d → -95.15d |
| CON-LEG101-LR-7690 | Installation of Cable Termination [Local – 01 Segment-02] | 2027-04-13 → 2027-04-20 (+7d) | 2027-04-18 → 2027-04-25 (+7d) | -82.2d → -95.15d |
| 3 | **LOCAL - 01 Segment-03 (From 2+133 to 3+200)** |  | 2027-05-19 → 2027-05-26 (+7d) |  |
| 8 | **Electrical Works** |  | 2027-05-19 → 2027-05-26 (+7d) |  |

| ID | Task | Start | Finish | Total float |
| --- | --- | --- | --- | --- |
| 2 | **Medium Voltage** |  | 2027-05-19 → 2027-05-26 (+7d) |  |
| CON-LEG101-LR-6900 | Excavation for Medium Voltage trench [Local – 01 Segment-03] | 2027-04-19 → 2027-04-26 (+7d) | 2027-04-22 → 2027-04-29 (+7d) | -82.2d → -95.15d |
| CON-LEG101-LR-7080 | Installation of Medium Voltage Cables [Local – 01 Segment-03] | 2027-04-24 → 2027-05-01 (+7d) | 2027-05-01 → 2027-05-08 (+7d) | -82.2d → -95.15d |
| CON-LEG101-LR-7170 | Installation of Straight joints cables [Local – 01 Segment-03] | 2027-05-02 → 2027-05-09 (+7d) | 2027-05-03 → 2027-05-10 (+7d) | -82.2d → -95.15d |
| CON-LEG101-LR-7260 | Installation of Cable Termination for 13.8 kv 3Cx 500 mm², Al /XLPE/LLDPE [Local – 01 Segment-03] | 2027-05-04 → 2027-05-11 (+7d) | 2027-05-06 → 2027-05-13 (+7d) | -82.2d → -95.15d |
| CON-LEG101-LR-7350 | Installation of Medium Voltage Switchgears [Local – 01 Segment-03] | 2027-05-08 → 2027-05-19 (+11d) | 2027-05-11 → 2027-05-23 (+12d) | -82.2d → -95.15d |
| CON-LEG101-LR-7700 | Installation of Cable Termination [Local – 01 Segment-03] | 2027-05-12 → 2027-05-24 (+12d) | 2027-05-19 → 2027-05-26 (+7d) | -82.2d → -95.15d |
| 4 | **Local – 02** |  | 2027-05-03 → 2027-05-10 (+7d) |  |
| 8 | **Electrical Works** |  | 2027-05-03 → 2027-05-10 (+7d) |  |
| 2 | **Medium Voltage** |  | 2027-05-03 → 2027-05-10 (+7d) |  |
| CON-LEG101-LR-6910 | Excavation for Medium Voltage trench [Local – 02 ] | 2027-03-15 → 2027-03-22 (+7d) | 2027-03-23 → 2027-03-30 (+7d) | -145d → -151d |
| CON-LEG101-LR-7090 | Installation of Medium Voltage Cables [Local – 02 ] | 2027-03-24 → 2027-03-31 (+7d) | 2027-04-07 → 2027-04-14 (+7d) | -145d → -151d |
| CON-LEG101-LR-7180 | Installation of Straight joints cables [Local – 02 ] | 2027-04-08 → 2027-04-15 (+7d) | 2027-04-14 → 2027-04-21 (+7d) | -145d → -151d |
| CON-LEG101-LR-7270 | Installation of Cable Termination for 13.8 kv 3Cx 500 mm², Al /XLPE/LLDPE [Local – 02 ] | 2027-04-15 → 2027-04-22 (+7d) | 2027-04-24 → 2027-05-01 (+7d) | -145d → -151d |
| CON-LEG101-LR-7360 | Installation of Medium Voltage Switchgears [Local – 02 ] | 2027-04-25 → 2027-05-02 (+7d) | 2027-04-29 → 2027-05-06 (+7d) | -145d → -151d |
| CON-LEG101-LR-7710 | Installation of Cable Termination [Local – 02 ] | 2027-05-01 → 2027-05-08 (+7d) | 2027-05-03 → 2027-05-10 (+7d) | -145d → -151d |
| 2 | **Local – 03** |  | 2027-05-31 → 2027-06-07 (+7d) |  |
| 8 | **Electrical Works** |  | 2027-05-31 → 2027-06-07 (+7d) |  |
| 2 | **Medium Voltage** |  | 2027-05-31 → 2027-06-07 (+7d) |  |
| CON-LEG101-LR-6920 | Excavation for Medium Voltage trench [Local – 03 ] | 2027-05-04 → 2027-05-11 (+7d) | 2027-05-06 → 2027-05-13 (+7d) | -145d → -151d |
| CON-LEG101-LR-7100 | Installation of Medium Voltage Cables [Local – 03 ] | 2027-05-08 → 2027-05-19 (+11d) | 2027-05-12 → 2027-05-24 (+12d) | -92.2d → -105.15d |
| CON-LEG101-LR-7190 | Installation of Straight joints cables [Local – 03 ] | 2027-05-13 → 2027-05-25 (+12d) | 2027-05-19 → 2027-05-26 (+7d) | -92.2d → -105.15d |
| CON-LEG101-LR-7280 | Installation of Cable Termination for 13.8 kv 3Cx 500 mm², Al /XLPE/LLDPE [Local – 03 ] | 2027-05-20 → 2027-05-27 (+7d) | 2027-05-23 → 2027-05-30 (+7d) | -92.2d → -105.15d |
| CON-LEG101-LR-7370 | Installation of Medium Voltage Switchgears [Local – 03 ] | 2027-05-24 → 2027-05-31 (+7d) | 2027-05-27 → 2027-06-03 (+7d) | -92.2d → -105.15d |
| CON-LEG101-LR-7720 | Installation of Cable Termination [Local – 03 ] | 2027-05-29 → 2027-06-05 (+7d) | 2027-05-31 → 2027-06-07 (+7d) | -92.2d → -105.15d |
| 3 | **Local – 04** |  | 2027-06-05 → 2027-06-12 (+7d) |  |
| 7 | **Road Works** |  | 2027-01-03 → 2027-01-10 (+7d) |  |
| 1 | **Earthworks and Site Grading** |  | 2026-12-05 → 2026-12-12 (+7d) |  |
| CON-LEG101-LR-1800 | Excavation for Roadway [Local – 04 ] | 2026-10-25 → 2026-11-01 (+7d) | 2026-11-10 → 2026-11-17 (+7d) | -42.24d → -48.24d |
| CON-LEG101-LR-4420 | Embankments to the roads [Local – 04 ] | 2026-11-11 → 2026-11-18 (+7d) | 2026-12-05 → 2026-12-12 (+7d) | 26.8d → 13.85d |
| 2 | **Asphalt Work** | 2026-12-06 → 2026-12-13 (+7d) | 2027-01-03 → 2027-01-10 (+7d) |  |
| CON-LEG101-LR-5630 | Subgrade [Local – 04 ] | 2026-12-06 → 2026-12-13 (+7d) | 2026-12-19 → 2026-12-26 (+7d) | 26.8d → 13.85d |
| CON-LEG101-LR-5730 | Aggregate base course [Local – 04 ] | 2026-12-21 → 2026-12-28 (+7d) | 2026-12-29 → 2027-01-05 (+7d) | 25.8d → 12.85d |
| CON-LEG101-LR-5830 | Prime Coat (MC1) [Local – 04 ] | 2026-12-30 → 2027-01-06 (+7d) | 2026-12-31 → 2027-01-07 (+7d) | 25.8d → 12.85d |
| CON-LEG101-LR-5930 | Bituminous Base Course [Local – 04 ] | 2027-01-02 → 2027-01-09 (+7d) | 2027-01-03 → 2027-01-10 (+7d) | 25.8d → 12.85d |
| 1 | **Electric Works** | 2027-05-04 → 2027-05-11 (+7d) | 2027-06-05 → 2027-06-12 (+7d) |  |
| 2 | **Medium Voltage** | 2027-05-04 → 2027-05-11 (+7d) | 2027-06-05 → 2027-06-12 (+7d) |  |
| CON-LEG101-LR-6930 | Excavation for Medium Voltage trench [Local – 04 ] | 2027-05-04 → 2027-05-11 (+7d) | 2027-05-08 → 2027-05-19 (+11d) | -145d → -151d |
| CON-LEG101-LR-7020 | Installation of Medium Voltage Cables Duct Banks [Local – 04 ] | 2027-05-09 → 2027-05-20 (+11d) | 2027-05-11 → 2027-05-23 (+12d) | -96.2d → -109.15d |
| CON-LEG101-LR-7110 | Installation of Medium Voltage Cables [Local – 04 ] | 2027-05-12 → 2027-05-24 (+12d) | 2027-05-23 → 2027-05-30 (+7d) | -96.2d → -109.15d |
| CON-LEG101-LR-7200 | Installation of Straight joints cables [Local – 04 ] | 2027-05-24 → 2027-05-31 (+7d) | 2027-05-26 → 2027-06-02 (+7d) | -96.2d → -109.15d |
| CON-LEG101-LR-7290 | Installation of Cable Termination for 13.8 kv 3Cx 500 mm², Al /XLPE/LLDPE [Local – 04 ] | 2027-05-27 → 2027-06-03 (+7d) | 2027-05-30 → 2027-06-06 (+7d) | -96.2d → -109.15d |
| CON-LEG101-LR-7380 | Installation of Medium Voltage Switchgears [Local – 04 ] | 2027-05-31 → 2027-06-07 (+7d) | 2027-06-01 → 2027-06-08 (+7d) | -96.2d → -109.15d |
| CON-LEG101-LR-7730 | Installation of Cable Termination [Local – 04 ] | 2027-06-02 → 2027-06-09 (+7d) | 2027-06-05 → 2027-06-12 (+7d) | -96.2d → -109.15d |
| 5 | **Local – 05** |  | 2027-05-30 → 2027-06-06 (+7d) |  |
| 8 | **Electrical Works** |  | 2027-05-30 → 2027-06-06 (+7d) |  |
| 2 | **Medium Voltage** |  | 2027-05-30 → 2027-06-06 (+7d) |  |
| CON-LEG101-LR-6940 | Excavation for Medium Voltage trench [Local – 05 ] | 2027-05-09 → 2027-05-20 (+11d) | 2027-05-12 → 2027-05-24 (+12d) | -91.2d → -104.15d |
| CON-LEG101-LR-7120 | Installation of Medium Voltage Cables [Local – 05 ] | 2027-05-13 → 2027-05-25 (+12d) | 2027-05-22 → 2027-05-29 (+7d) | -91.2d → -104.15d |
| CON-LEG101-LR-7210 | Installation of Straight joints cables [Local – 05 ] | 2027-05-23 → 2027-05-30 (+7d) | 2027-05-24 → 2027-05-31 (+7d) | -91.2d → -104.15d |
| CON-LEG101-LR-7300 | Installation of Cable Termination for 13.8 kv 3Cx 500 mm², Al /XLPE/LLDPE [Local – 05 ] | 2027-05-25 → 2027-06-01 (+7d) | 2027-05-26 → 2027-06-02 (+7d) | -91.2d → -104.15d |
| CON-LEG101-LR-7390 | Installation of Medium Voltage Switchgears [Local – 05 ] | 2027-05-27 → 2027-06-03 (+7d) | 2027-05-29 → 2027-06-05 (+7d) | -91.2d → -104.15d |
| CON-LEG101-LR-7740 | Installation of Cable Termination [Local – 05 ] | 2027-05-27 → 2027-06-03 (+7d) | 2027-05-30 → 2027-06-06 (+7d) | -91.2d → -104.15d |
| 6 | **Local – 06** |  | 2027-05-29 → 2027-06-05 (+7d) |  |
| 8 | **Electrical Works** |  | 2027-05-29 → 2027-06-05 (+7d) |  |
| 2 | **Medium Voltage** |  | 2027-05-29 → 2027-06-05 (+7d) |  |
| CON-LEG101-LR-6950 | Excavation for Medium Voltage trench [Local – 06 ] | 2027-05-10 → 2027-05-22 (+12d) | 2027-05-12 → 2027-05-24 (+12d) | -90.2d → -103.15d |
| CON-LEG101-LR-7130 | Installation of Medium Voltage Cables [Local – 06 ] | 2027-05-13 → 2027-05-25 (+12d) | 2027-05-20 → 2027-05-27 (+7d) | -90.2d → -103.15d |
| CON-LEG101-LR-7220 | Installation of Straight joints cables [Local – 06 ] | 2027-05-22 → 2027-05-29 (+7d) | 2027-05-23 → 2027-05-30 (+7d) | -90.2d → -103.15d |
| CON-LEG101-LR-7310 | Installation of Cable Termination for 13.8 kv 3Cx 500 mm², Al /XLPE/LLDPE [Local – 06 ] | 2027-05-24 → 2027-05-31 (+7d) | 2027-05-25 → 2027-06-01 (+7d) | -90.2d → -103.15d |
| CON-LEG101-LR-7400 | Installation of Medium Voltage Switchgears [Local – 06 ] | 2027-05-26 → 2027-06-02 (+7d) | 2027-05-27 → 2027-06-03 (+7d) | -90.2d → -103.15d |
| CON-LEG101-LR-7750 | Installation of Cable Termination [Local – 06 ] | 2027-05-26 → 2027-06-02 (+7d) | 2027-05-29 → 2027-06-05 (+7d) | -90.2d → -103.15d |
| 7 | **Local – 07** |  | 2027-05-27 → 2027-06-03 (+7d) |  |
| 7 | **Road Works** |  | 2026-11-11 → 2026-11-18 (+7d) |  |
| 1 | **Earthworks and Site Grading** |  | 2026-11-11 → 2026-11-18 (+7d) |  |
| CON-LEG101-LR-5070 | Embankments to the parcels for roads [Local – 07 ] |  | 2026-11-11 → 2026-11-18 (+7d) | 71.52d → 58.57d |
| 8 | **Electrical Works** |  | 2027-05-27 → 2027-06-03 (+7d) |  |
| 2 | **Medium Voltage** |  | 2027-05-27 → 2027-06-03 (+7d) |  |
| CON-LEG101-LR-6960 | Excavation for Medium Voltage trench [Local – 07 ] | 2027-05-10 → 2027-05-22 (+12d) | 2027-05-12 → 2027-05-24 (+12d) | -89.2d → -102.15d |
| CON-LEG101-LR-7140 | Installation of Medium Voltage Cables [Local – 07 ] | 2027-05-13 → 2027-05-25 (+12d) | 2027-05-20 → 2027-05-27 (+7d) | -89.2d → -102.15d |

| ID | Task | Start | Finish | Complete | Total float |
| --- | --- | --- | --- | --- | --- |
| CON-LEG101-LR-7230 | Installation of Straight joints cables [Local – 07 ] | 2027-05-22 → 2027-05-29 (+7d) | 2027-05-23 → 2027-05-30 (+7d) |  | -89.2d → -102.15d |
| CON-LEG101-LR-7320 | Installation of Cable Termination for 13.8 kv 3Cx 500 mm², Al /XLPE/LLDPE [Local – 07 ] | 2027-05-24 → 2027-05-31 (+7d) | 2027-05-25 → 2027-06-01 (+7d) |  | -89.2d → -102.15d |
| CON-LEG101-LR-7410 | Installation of Medium Voltage Switchgears [Local – 07 ] | 2027-05-26 → 2027-06-02 (+7d) | 2027-05-27 → 2027-06-03 (+7d) |  | -89.2d → -102.15d |
| CON-LEG101-LR-7760 | Installation of Cable Termination [Local – 07 ] | 2027-05-26 → 2027-06-02 (+7d) | 2027-05-27 → 2027-06-03 (+7d) |  | -89.2d → -102.15d |
| 6 | **Deep Infrastructure network** |  | 2027-01-04 → 2027-01-11 (+7d) |  |  |
| 1 | **Local – 01** |  | 2026-11-02 → 2026-11-07 (+5d) |  |  |
| 1 | **LOCAL - 01 Segment-01 (From 0+000 to 1+066)** |  | 2026-11-01 → 2026-11-05 (+4d) |  |  |
| 1 | **Stormwater Utilities** |  | 2026-11-01 → 2026-11-05 (+4d) |  |  |
| 1 | **Manhole** |  | 2026-10-27 → 2026-11-03 (+7d) |  |  |
| CON-LEG101-LR-10920 | Finishing and Testing of Inlet Manholes [Local – 01 Segment-01] |  | 2026-10-27 → 2026-11-03 (+7d) | 80% → 85% | 83.75d → 71.6d |
| 3 | **Concrete Chambers/Outfalls** |  | 2026-11-01 → 2026-11-05 (+4d) |  |  |
| CON-LEG101-LR-10880 | FInishing and Testing of Concrete chambers [Local – 01 Segment-01] |  | 2026-11-01 → 2026-11-05 (+4d) | 60% → 75% | 83.75d → 80.9d |
| 4 | **Sanitary Sewerage** |  | 2026-10-25 → 2026-11-01 (+7d) |  |  |
| 1 | **Manhole** |  | 2026-10-25 → 2026-11-01 (+7d) |  |  |
| CON-LEG101-LR-3500 | Installation of Fiberglass Manholes [Local – 01 Segment-01] |  | 2026-10-25 → 2026-11-01 (+7d) |  | 34.8d → 21.85d |
| 2 | **LOCAL - 01 Segment-02 (From 1+066 to 2+133)** |  | 2026-11-02 → 2026-11-07 (+5d) |  |  |
| 1 | **Stormwater Utilities** |  | 2026-11-02 → 2026-11-07 (+5d) |  |  |
| 3 | **Concrete Chambers/Outfalls** |  | 2026-11-02 → 2026-11-07 (+5d) |  |  |
| CON-LEG101-LR-11030 | FInishing and Testing of Concrete chambers [Local – 01 Segment-02] |  | 2026-11-02 → 2026-11-07 (+5d) |  | 83.75d → 80.9d |
| 4 | **Sanitary Sewerage** |  | 2026-10-25 → 2026-11-01 (+7d) |  |  |
| 1 | **Manhole** |  | 2026-10-25 → 2026-11-01 (+7d) |  |  |
| CON-LEG101-LR-3510 | Installation of Fiberglass Manholes [Local – 01 Segment-02] |  | 2026-10-25 → 2026-11-01 (+7d) |  | 36.38d → 23.43d |
| 3 | **LOCAL - 01 Segment-03 (From 2+133 to 3+200)** |  | 2026-11-02 → 2026-11-07 (+5d) |  |  |
| 1 | **Stormwater Utilities** |  | 2026-11-02 → 2026-11-07 (+5d) |  |  |
| 1 | **Manhole** |  | 2026-10-25 → 2026-11-01 (+7d) |  |  |
| CON-LEG101-LR-11070 | Finishing and Testing of Inlet Manholes [Local – 01 Segment-03] |  | 2026-10-25 → 2026-11-01 (+7d) |  | 63.5d → 50.55d |
| 3 | **Concrete Chambers/Outfalls** |  | 2026-11-02 → 2026-11-07 (+5d) |  |  |
| CON-LEG101-LR-11130 | FInishing and Testing of Concrete chambers [Local – 01 Segment-03] |  | 2026-11-02 → 2026-11-07 (+5d) |  | 83.75d → 80.9d |
| 4 | **Sanitary Sewerage** |  | 2026-10-25 → 2026-11-01 (+7d) |  |  |
| 1 | **Manhole** |  | 2026-10-25 → 2026-11-01 (+7d) |  |  |
| CON-LEG101-LR-3520 | Installation of Fiberglass Manholes [Local – 01 Segment-03] |  | 2026-10-25 → 2026-11-01 (+7d) |  | 62.8d → 49.85d |
| 2 | **Local – 02** |  | 2026-11-03 → 2026-11-07 (+4d) |  |  |
| 1 | **Stormwater Utilities** |  | 2026-11-03 → 2026-11-07 (+4d) |  |  |
| 1 | **Manhole** |  | 2026-10-25 → 2026-11-01 (+7d) |  |  |
| CON-LEG101-LR-11180 | Finishing and Testing of Inlet Manholes [Local – 02 ] |  | 2026-10-25 → 2026-11-01 (+7d) |  | 79.2d → 73.05d |
| 3 | **Concrete Chambers/Outfalls** |  | 2026-11-03 → 2026-11-07 (+4d) |  |  |
| CON-LEG101-LR-11230 | FInishing and Testing of Concrete chambers [Local – 02 ] |  | 2026-11-03 → 2026-11-07 (+4d) |  | 83.75d → 80.9d |
| 4 | **Sanitary Sewerage** |  | 2026-10-25 → 2026-11-01 (+7d) |  |  |
| 1 | **Manhole** |  | 2026-10-25 → 2026-11-01 (+7d) |  |  |
| CON-LEG101-LR-3530 | Installation of Fiberglass Manholes [Local – 02 ] |  | 2026-10-25 → 2026-11-01 (+7d) |  | -28.24d → -34.24d |
| 3 | **Local – 03** |  | 2026-11-17 → 2026-11-24 (+7d) |  |  |
| 1 | **Stormwater Utilities** |  | 2026-11-17 → 2026-11-24 (+7d) |  |  |
| 1 | **Manhole** |  | 2026-11-17 → 2026-11-24 (+7d) |  |  |
| CON-LEG101-LR-11280 | Finishing and Testing of Inlet Manholes [Local – 03 ] | 2026-10-25 → 2026-11-01 (+7d) | 2026-11-17 → 2026-11-24 (+7d) |  | 79.2d → 74.1d |
| 3 | **Concrete Chambers/Outfalls** |  | 2026-11-16 → 2026-11-19 (+3d) |  |  |
| CON-LEG101-LR-11340 | FInishing and Testing of Concrete chambers [Local – 03 ] | 2026-11-03 → 2026-11-07 (+4d) | 2026-11-16 → 2026-11-19 (+3d) |  | 83.75d → 80.9d |
| 4 | **Local – 04** |  | 2027-01-03 → 2027-01-10 (+7d) |  |  |
| 1 | **Stormwater Utilities** |  | 2027-01-03 → 2027-01-10 (+7d) |  |  |
| 2 | **Pipe Work** |  | 2026-12-01 → 2026-12-08 (+7d) |  |  |
| CON-LEG101-LR-3930 | Testing for Stormwater Utilities Network [Local – 04 ] | 2026-11-11 → 2026-11-18 (+7d) | 2026-11-24 → 2026-12-01 (+7d) |  | -42.24d → -48.24d |
| CON-LEG101-LR-4140 | Installation of Micron Marker Magnetic Tape [Local – 04 ] | 2026-11-25 → 2026-12-02 (+7d) | 2026-11-26 → 2026-12-03 (+7d) |  | -42.24d → -48.24d |
| CON-LEG101-LR-4250 | Backfilling to Subgrade Elevation [Local – 04 ] | 2026-11-28 → 2026-12-05 (+7d) | 2026-12-01 → 2026-12-08 (+7d) |  | -42.24d → -48.24d |
| 1 | **Manhole** |  | 2026-12-09 → 2026-12-16 (+7d) |  |  |
| CON-LEG101-LR-4370 | Installation of Inlet Manholes [Local – 04 ] |  | 2026-11-15 → 2026-11-22 (+7d) |  | -34.24d → -40.24d |
| CON-LEG101-LR-11380 | Backfilling of Inlet Manholes [Local – 04 ] | 2026-11-16 → 2026-11-23 (+7d) | 2026-11-22 → 2026-11-29 (+7d) |  | -34.24d → -40.24d |
| CON-LEG101-LR-11390 | Finishing and Testing of Inlet Manholes [Local – 04 ] | 2026-11-23 → 2026-11-30 (+7d) | 2026-12-09 → 2026-12-16 (+7d) |  | 75d → 69.9d |
| 3 | **Concrete Chambers/Outfalls** | 2026-11-16 → 2026-11-23 (+7d) | 2027-01-03 → 2027-01-10 (+7d) |  |  |
| CON-LEG101-LR-11400 | Excavation of Concrete chambers [Local – 04 ] | 2026-11-16 → 2026-11-23 (+7d) | 2026-11-22 → 2026-11-29 (+7d) |  | 25.8d → 12.85d |
| CON-LEG101-LR-11410 | PC of Concrete chambers [Local – 04 ] | 2026-11-23 → 2026-11-30 (+7d) | 2026-11-24 → 2026-12-01 (+7d) |  | 25.8d → 12.85d |
| CON-LEG101-LR-4470 | Installation of Concrete chambers [Local – 04 ] | 2026-11-25 → 2026-12-02 (+7d) | 2026-12-06 → 2026-12-13 (+7d) |  | 25.8d → 12.85d |
| CON-LEG101-LR-11420 | Installation UPVC Pipes to Concrete chambers [Local – 04 ] | 2026-12-07 → 2026-12-14 (+7d) | 2026-12-13 → 2026-12-20 (+7d) |  | 25.8d → 12.85d |
| CON-LEG101-LR-11430 | Backfilling to Concrete chambers [Local – 04 ] | 2026-12-14 → 2026-12-21 (+7d) | 2026-12-20 → 2026-12-27 (+7d) |  | 25.8d → 12.85d |
| CON-LEG101-LR-11440 | FInishing and Testing of Concrete chambers [Local – 04 ] | 2026-12-21 → 2026-12-28 (+7d) | 2027-01-03 → 2027-01-10 (+7d) |  | 53.95d → 48.85d |
| 4 | **Sanitary Sewerage** |  | 2026-11-23 → 2026-11-30 (+7d) |  |  |
| 2 | **Pipe Work** |  | 2026-11-23 → 2026-11-30 (+7d) |  |  |
| CON-LEG101-LR-3180 | Concrete encasement, pipe dia 200 and 350 mm [Local – 04 ] | 2026-11-11 → 2026-11-18 (+7d) | 2026-11-14 → 2026-11-21 (+7d) |  | -35.24d → -41.24d |
| CON-LEG101-LR-3360 | Installation of Micron Marker Magnetic Tape [Local – 04 ] | 2026-11-15 → 2026-11-22 (+7d) | 2026-11-16 → 2026-11-23 (+7d) |  | -35.24d → -41.24d |
| CON-LEG101-LR-3450 | Backfilling to Subgrade Elevation [Local – 04 ] | 2026-11-17 → 2026-11-24 (+7d) | 2026-11-23 → 2026-11-30 (+7d) |  | -35.24d → -41.24d |
| 1 | **Manhole** |  | 2026-11-14 → 2026-11-21 (+7d) |  |  |
| CON-LEG101-LR-3540 | Installation of Fiberglass Manholes [Local – 04 ] |  | 2026-11-14 → 2026-11-21 (+7d) |  | -27.24d → -33.24d |

| ID | Task | Start | Finish | Complete | Total float |
| --- | --- | --- | --- | --- | --- |
| 5 | **Local – 05** |  | 2026-11-11 → 2026-11-18 (+7d) |  |  |
| 4 | **Sanitary Sewerage** |  | 2026-11-11 → 2026-11-18 (+7d) |  |  |
| 1 | **Manhole** |  | 2026-11-11 → 2026-11-18 (+7d) |  |  |
| CON-LEG101-LR-3550 | Installation of Fiberglass Manholes [Local – 05 ] |  | 2026-11-11 → 2026-11-18 (+7d) |  | 55.9d → 42.95d |
| 8 | **Local – 08** |  | 2027-01-04 → 2027-01-11 (+7d) |  |  |
| 1 | **Stormwater Utilities** |  | 2027-01-04 → 2027-01-11 (+7d) |  |  |
| 1 | **Manhole** |  | 2026-12-10 → 2026-12-17 (+7d) |  |  |
| CON-LEG101-LR-11750 | Finishing and Testing of Inlet Manholes [Local – 08 ] |  | 2026-12-10 → 2026-12-17 (+7d) |  | 75d → 69.9d |
| 3 | **Concrete Chambers/Outfalls** |  | 2027-01-04 → 2027-01-11 (+7d) |  |  |
| CON-LEG101-LR-11800 | FInishing and Testing of Concrete chambers [Local – 08 ] |  | 2027-01-04 → 2027-01-11 (+7d) |  | 53.95d → 48.85d |
| 7 | **Shallow infrastructure network** |  | 2027-09-18 → 2027-09-26 (+8d) |  |  |
| 1 | **Local – 01** |  | 2027-07-14 → 2027-07-20 (+6d) |  |  |
| 1 | **LOCAL - 01 Segment-01 (From 0+000 to 1+066)** |  | 2027-07-13 → 2027-07-18 (+5d) |  |  |
| 1 | **Electrical Works** |  | 2027-06-19 → 2027-06-23 (+4d) |  |  |
| 3 | **Low Voltage** |  | 2027-06-19 → 2027-06-23 (+4d) |  |  |
| CON-LEG101-LR-7780 | Excavation works for Low Voltage Cables [Local – 01 Segment-01] |  | 2027-06-10 → 2027-06-16 (+6d) | 75% → 80% | -96.2d → -100.45d |
| CON-LEG101-LR-7880 | Installation of Low Voltage Cables [Local – 01 Segment-01] |  | 2027-06-16 → 2027-06-21 (+5d) | 75% → 80% | -72.2d → -75.4d |
| CON-LEG101-LR-8760 | Installation of Earthing System [Local – 01 Segment-01] |  | 2027-06-19 → 2027-06-23 (+4d) |  | 40.8d → 44.3d |
| 10 | **Telecommunications** |  | 2027-07-13 → 2027-07-18 (+5d) |  |  |
| CON-LEG101-LR-9330 | Installation of Reinforced concrete manhole [Local – 01 Segment-01] |  | 2027-07-13 → 2027-07-18 (+5d) |  | 19.65d → 23.15d |
| CON-LEG101-LR-9030 | Installation of Sand encased duct banks for secondary network [Local – 01 Segment-01] |  | 2027-06-23 → 2027-06-28 (+5d) |  | 19.65d → 23.15d |
| CON-LEG101-LR-9130 | Installation of Sand and soil encased duct banks, for combined network of primary and secondary [Local – 01 Segment-01 |  | 2027-07-03 → 2027-07-07 (+4d) |  | 19.65d → 23.15d |
| CON-LEG101-LR-9230 | Installation of Concrete encased duct banks for for combined network of primary and secondary [Local – 01 Segment-01] |  | 2027-07-11 → 2027-07-15 (+4d) |  | 19.65d → 23.15d |
| 11 | **CCTV feeding system and GSM** |  | 2027-06-24 → 2027-06-30 (+6d) |  |  |
| CON-LEG101-LR-8550 | Excavation works for Low Voltage Cables for CCTV feeding system and GSM [Local – 01 Segment-01] |  | 2027-06-10 → 2027-06-16 (+6d) |  | -96.2d → -100.45d |
| CON-LEG101-LR-9430 | Installation of Fiber Optic Patch Panel 12 port [Local – 01 Segment-01] |  | 2027-06-14 → 2027-06-20 (+6d) |  | 33.95d → 36.4d |
| CON-LEG101-LR-9450 | Installation of Modular Industrial Switches for main pole [Local – 01 Segment-01] |  | 2027-06-14 → 2027-06-20 (+6d) |  | 33.95d → 36.4d |
| CON-LEG101-LR-9460 | Installation of 8POE ports Industrial Switches for remote poles [Local – 01 Segment-01] |  | 2027-06-15 → 2027-06-21 (+6d) |  | 33.95d → 36.4d |
| CON-LEG101-LR-9520 | Installation of Core Switch [Local – 01 Segment-01] |  | 2027-06-15 → 2027-06-21 (+6d) |  | 33.95d → 36.4d |
| CON-LEG101-LR-9540 | Installation of Access Switch 48 port [Local – 01 Segment-01] |  | 2027-06-16 → 2027-06-22 (+6d) |  | 33.95d → 36.4d |
| CON-LEG101-LR-9560 | Installation of Server [Local – 01 Segment-01] |  | 2027-06-16 → 2027-06-22 (+6d) |  | 33.95d → 36.4d |
| CON-LEG101-LR-9590 | Installation of Stand rack 42U- 19" [Local – 01 Segment-01] |  | 2027-06-16 → 2027-06-22 (+6d) |  | 33.95d → 36.4d |
| CON-LEG101-LR-9610 | Installation of IP Outdoor CCTV POE Camera,5 MP, Metal Housing [Local – 01 Segment-01] |  | 2027-06-17 → 2027-06-23 (+6d) |  | 33.95d → 36.4d |
| CON-LEG101-LR-9690 | Installation of Outdoor PTZ IP66 [Local – 01 Segment-01] |  | 2027-06-17 → 2027-06-23 (+6d) |  | 33.95d → 36.4d |
| CON-LEG101-LR-9850 | Installation of Horizontal Power Distribution Unit (min 8 outlets) [Local – 01 Segment-01] |  | 2027-06-24 → 2027-06-30 (+6d) |  | 33.95d → 36.4d |
| CON-LEG101-LR-9940 | Installation of Short Range wireless point to point wireless bridge [Local – 01 Segment-01] |  | 2027-06-24 → 2027-06-30 (+6d) |  | 33.95d → 36.4d |
| CON-LEG101-LR-8620 | Installation of Low Voltage Cables for CCTV feeding system and GSM [Local – 01 Segment-01] |  | 2027-06-13 → 2027-06-19 (+6d) |  | 33.95d → 36.4d |
| CON-LEG101-LR-9780 | Installation of Security workstation with 1 x 19" LED screen [Local – 01 Segment-01] | 2027-06-17 → 2027-06-23 (+6d) | 2027-06-19 → 2027-06-24 (+5d) |  | 33.95d → 36.4d |
| CON-LEG101-LR-9790 | Installation of LED Screen 43" (24/7 operation) with Ethernet decoders [Local – 01 Segment-01] | 2027-06-19 → 2027-06-24 (+5d) | 2027-06-21 → 2027-06-27 (+6d) |  | 33.95d → 36.4d |
| CON-LEG101-LR-9830 | Installation of Network Video Recorder 4k 64 Channel [Local – 01 Segment-01] | 2027-06-21 → 2027-06-27 (+6d) | 2027-06-22 → 2027-06-28 (+6d) |  | 33.95d → 36.4d |
| CON-LEG101-LR-9840 | Installation of Keypad [Local – 01 Segment-01] | 2027-06-22 → 2027-06-28 (+6d) | 2027-06-24 → 2027-06-30 (+6d) |  | 33.95d → 36.4d |
| 12 | **Earthing System** | 2027-06-24 → 2027-06-30 (+6d) | 2027-06-27 → 2027-07-03 (+6d) |  |  |
| CON-LEG101-LR-8280 | Installation of Earthing for Distribution panels,SL feeder pillars, KWH, Unit substations and RMU [Local – 01 Segment-01 | 2027-06-24 → 2027-06-30 (+6d) | 2027-06-27 → 2027-07-03 (+6d) |  | 33.95d → 36.4d |
| 9 | **Road Lighting** |  | 2027-07-08 → 2027-07-14 (+6d) |  |  |
| CON-LEG101-LR-8080 | Installation of Lighting poles [Local – 01 Segment-01] |  | 2027-06-07 → 2027-06-14 (+7d) |  | -95.8d → -109.15d |
| CON-LEG101-LR-8180 | Installation of Street Lighting Luminaire [Local – 01 Segment-01] |  | 2027-06-08 → 2027-06-15 (+7d) |  | -95.8d → -109.15d |
| CON-LEG101-LR-7420 | Installation of Unit Substation Including concrete foundations and fencing [Local – 01 Segment-01] |  | 2027-06-17 → 2027-06-23 (+6d) |  | -96.2d → -100.45d |
| CON-LEG101-LR-8430 | Installation of Street Lighting feeder pillars / Lighting panels [Local – 01 Segment-01] |  | 2027-06-09 → 2027-06-16 (+7d) |  | -95.8d → -109.15d |
| CON-LEG101-LR-8330 | Installation of Earthing for Streetlighting feeders for every end pole circuits. [Local – 01 Segment-01] |  | 2027-07-08 → 2027-07-14 (+6d) |  | -96.2d → -100.45d |
| CON-LEG101-LR-7500 | Installation of Ring Main Unit RMU [Local – 01 Segment-01] | 2027-06-17 → 2027-06-23 (+6d) | 2027-07-05 → 2027-07-11 (+6d) |  | -96.2d → -100.45d |
| 2 | **LOCAL - 01 Segment-02 (From 1+066 to 2+133)** |  | 2027-07-14 → 2027-07-20 (+6d) |  |  |
| 1 | **Electrical Works** |  | 2027-07-10 → 2027-07-15 (+5d) |  |  |
| 3 | **Low Voltage** |  | 2027-07-10 → 2027-07-15 (+5d) |  |  |
| CON-LEG101-LR-8770 | Installation of Earthing System [Local – 01 Segment-02] |  | 2027-07-10 → 2027-07-15 (+5d) |  | 23.3d → 25.75d |
| 12 | **Earthing System** |  | 2027-07-14 → 2027-07-20 (+6d) |  |  |
| CON-LEG101-LR-8290 | Installation of Earthing for Distribution panels,SL feeder pillars, KWH, Unit substations and RMU [Local – 01 Segment-02 |  | 2027-07-14 → 2027-07-20 (+6d) |  | -96.2d → -100.45d |
| 9 | **Road Lighting** |  | 2027-06-10 → 2027-06-17 (+7d) |  |  |
| CON-LEG101-LR-8340 | Installation of Earthing for Streetlighting feeders for every end pole circuits. [Local – 01 Segment-02] |  | 2027-06-10 → 2027-06-17 (+7d) |  | -95.8d → -109.15d |
| 5 | **TSE Network** |  | 2026-10-27 → 2026-11-03 (+7d) |  |  |
| 1 | **Valves/Chamber** |  | 2026-10-27 → 2026-11-03 (+7d) |  |  |
| CON-LEG101-LR-15040 | Installation of Air Valve chambers [Local – 01 Segment-03] |  | 2026-10-27 → 2026-11-03 (+7d) |  | 99.4d → 86.05d |
| CON-LEG101-LR-2630 | Installation of Wash out chambers [Local – 01 Segment-03] |  | 2026-10-26 → 2026-11-02 (+7d) |  | 99.4d → 86.05d |
| 6 | **Public Water Utility Distribution** |  | 2026-10-27 → 2026-11-03 (+7d) |  |  |
| 1 | **Valves/Chamber** |  | 2026-10-27 → 2026-11-03 (+7d) |  |  |
| CON-LEG101-LR-1270 | Installation of Air Valve chambers [Local – 01 Segment-03] |  | 2026-10-27 → 2026-11-03 (+7d) |  | 171.5d → 166d |
| CON-LEG101-LR-1230 | Installation of Wash out chambers [Local – 01 Segment-03] |  | 2026-10-26 → 2026-11-02 (+7d) |  | 171.5d → 166d |
| CON-LEG101-LR-8850 | Installation of Sand and soil encased duct banks for primary network [Local – 01 Segment-03] |  | 2027-05-05 → 2027-05-10 (+5d) | 30% → 40% | -24.6d → -24.3d |
| CON-LEG101-LR-8950 | Installation of Concrete encased duct banks for primary network [Local – 01 Segment-03] |  | 2027-05-19 → 2027-05-23 (+4d) | 30% → 40% | -24.6d → -24.3d |
| CON-LEG101-LR-9050 | Installation of Sand encased duct banks for secondary network [Local – 01 Segment-03] |  | 2027-05-30 → 2027-06-01 (+2d) | 30% → 40% | -24.6d → -24.3d |
| CON-LEG101-LR-9150 | Installation of Sand and soil encased duct banks, for combined network of primary and secondary [Local – 01 Segment-03 |  |  | 30% → 40% | -24.6d → -24.3d |

| ID | Task | Start | Finish | Complete | Total float |
| --- | --- | --- | --- | --- | --- |
| 9 | **Road Lighting** |  | 2027-06-16 → 2027-06-23 (+7d) |  |  |
| CON-LEG101-LR-8100 | Installation of Lighting poles [Local – 01 Segment-03] |  | 2027-04-25 → 2027-05-02 (+7d) |  | -74.3d → -87.65d |
| CON-LEG101-LR-8200 | Installation of Street Lighting Luminaire [Local – 01 Segment-03] |  | 2027-04-26 → 2027-05-03 (+7d) |  | -60.1d → -73.45d |
| CON-LEG101-LR-8450 | Installation of Street Lighting feeder pillars / Lighting panels [Local – 01 Segment-03] |  | 2027-05-30 → 2027-06-06 (+7d) |  | -85.5d → -98.85d |
| CON-LEG101-LR-8350 | Installation of Earthing for Streetlighting feeders for every end pole circuits. [Local – 01 Segment-03] |  | 2027-06-16 → 2027-06-23 (+7d) |  | -95.8d → -109.15d |
| 2 | **Local – 02** |  | 2027-06-23 → 2027-06-30 (+7d) |  |  |
| 5 | **TSE Network** |  | 2027-06-06 → 2027-06-13 (+7d) |  |  |
| 1 | **Valves/Chamber** |  | 2027-06-06 → 2027-06-13 (+7d) |  |  |
| CON-LEG101-LR-2410 | Installation of Wash out Valves [Local – 02 ] |  | 2026-10-27 → 2026-11-03 (+7d) |  | 55.1d → 49.1d |
| CON-LEG101-LR-2710 | Installation of Wash out chambers [Local – 02 ] |  | 2026-10-27 → 2026-11-03 (+7d) |  | 55.1d → 49.1d |
| CON-LEG101-LR-2490 | Installation of Fire Hydrant [Local – 02 ] |  | 2027-06-06 → 2027-06-13 (+7d) |  | -81.35d → -94.7d |
| 6 | **Public Water Utility Distribution** |  | 2026-10-28 → 2026-11-04 (+7d) |  |  |
| 1 | **Valves/Chamber** |  | 2026-10-28 → 2026-11-04 (+7d) |  |  |
| CON-LEG101-LR-15080 | Installation of Air Valve chambers [Local – 02 ] |  | 2026-10-27 → 2026-11-03 (+7d) |  | 81.45d → 69.7d |
| CON-LEG101-LR-1030 | Installation of Gate (Sluice) valves (Direct buried) [Local – 02 ] |  | 2026-10-28 → 2026-11-04 (+7d) |  | 81.45d → 69.7d |
| CON-LEG101-LR-15070 | Installation of Wash out chambers [Local – 02 ] |  | 2026-10-26 → 2026-11-02 (+7d) |  | 55.9d → 49.9d |
| 1 | **Electrical Works** |  | 2027-06-21 → 2027-06-27 (+6d) |  |  |
| 3 | **Low Voltage** |  | 2027-06-21 → 2027-06-27 (+6d) |  |  |
| CON-LEG101-LR-8490 | Installation of Low Voltage Distribution Panel [Local – 02 ] | 2027-05-30 → 2027-06-06 (+7d) | 2027-06-09 → 2027-06-16 (+7d) |  | -92.2d → -103.95d |
| CON-LEG101-LR-8540 | Installation of KWH Meters Walls [Local – 02 ] | 2027-06-10 → 2027-06-17 (+7d) | 2027-06-19 → 2027-06-24 (+5d) |  | 39.15d → 41d |
| CON-LEG101-LR-8790 | Installation of Earthing System [Local – 02 ] | 2027-06-19 → 2027-06-26 (+7d) | 2027-06-21 → 2027-06-27 (+6d) |  | 39.15d → 41d |
| 10 | **Telecommunications** |  | 2027-06-12 → 2026-10-08 (-247d) |  |  |
| CON-LEG101-LR-8960 | Installation of Concrete encased duct banks for primary network [Local – 02 ] |  | 2027-03-24 → 2026-10-08 A (-167d) | 90% → 100% | -31d → none |
| CON-LEG101-LR-9060 | Installation of Sand encased duct banks for secondary network [Local – 02 ] |  | 2027-03-25 → 2026-10-08 A (-168d) | 90% → 100% | -31d → none |
| CON-LEG101-LR-9160 | Installation of Sand and soil encased duct banks, for combined network of primary and secondary [Local – 02 ] |  | 2027-06-12 → 2026-10-08 A (-247d) | 90% → 100% | -92.2d → none |
| 11 | **CCTV feeding system and GSM** |  | 2027-06-07 → 2027-06-14 (+7d) |  |  |
| CON-LEG101-LR-9470 | Installation of 8POE ports Industrial Switches for remote poles [Local – 02 ] |  | 2027-04-26 → 2027-05-03 (+7d) |  | -65.6d → -78.95d |
| CON-LEG101-LR-9570 | Installation of Server [Local – 02 ] |  | 2027-04-27 → 2027-05-04 (+7d) |  | -65.6d → -78.95d |
| CON-LEG101-LR-9640 | Installation of IP Outdoor CCTV POE Camera,5 MP, Metal Housing [Local – 02 ] |  | 2027-04-28 → 2027-05-05 (+7d) |  | -65.6d → -78.95d |
| CON-LEG101-LR-9720 | Installation of Outdoor PTZ IP66 [Local – 02 ] |  | 2027-04-28 → 2027-05-05 (+7d) |  | -65.6d → -78.95d |
| CON-LEG101-LR-9970 | Installation of Short Range wireless point to point wireless bridge [Local – 02 ] |  | 2027-06-07 → 2027-06-14 (+7d) |  | -88.3d → -101.65d |
| CON-LEG101-LR-9800 | Installation of LED Screen 43" (24/7 operation) with Ethernet decoders [Local – 02 ] | 2027-05-30 → 2027-06-06 (+7d) | 2027-06-06 → 2027-06-13 (+7d) |  | -88.3d → -101.65d |
| 12 | **Earthing System** | 2027-06-16 → 2027-06-23 (+7d) | 2027-06-23 → 2027-06-30 (+7d) |  |  |
| CON-LEG101-LR-8310 | Installation of Earthing for Distribution panels,SL feeder pillars, KWH, Unit substations and RMU [Local – 02 ] | 2027-06-16 → 2027-06-23 (+7d) | 2027-06-23 → 2027-06-30 (+7d) |  | -95.8d → -109.15d |
| 9 | **Road Lighting** |  | 2027-06-19 → 2027-06-26 (+7d) |  |  |
| CON-LEG101-LR-8460 | Installation of Street Lighting feeder pillars / Lighting panels [Local – 02 ] |  | 2027-06-14 → 2027-06-21 (+7d) |  | -94.3d → -107.65d |
| CON-LEG101-LR-8360 | Installation of Earthing for Streetlighting feeders for every end pole circuits. [Local – 02 ] |  | 2027-06-19 → 2027-06-26 (+7d) |  | -95.8d → -109.15d |
| CON-LEG101-LR-7430 | Installation of Unit Substation Including concrete foundations and fencing [Local – 02 ] | 2027-04-26 → 2027-05-03 (+7d) | 2027-05-03 → 2027-05-10 (+7d) |  | -76.3d → -89.65d |
| CON-LEG101-LR-7510 | Installation of Ring Main Unit RMU [Local – 02 ] | 2027-05-30 → 2027-06-06 (+7d) | 2027-06-13 → 2027-06-20 (+7d) |  | -94.3d → -107.65d |
| 3 | **Local – 03** |  | 2027-08-02 → 2027-08-09 (+7d) |  |  |
| 5 | **TSE Network** |  | 2027-06-06 → 2027-06-13 (+7d) |  |  |
| 1 | **Valves/Chamber** |  | 2027-06-06 → 2027-06-13 (+7d) |  |  |
| CON-LEG101-LR-2500 | Installation of Fire Hydrant [Local – 03 ] |  | 2027-06-06 → 2027-06-13 (+7d) |  | -81.35d → -94.7d |
| CON-LEG101-LR-2720 | Installation of Air Valve chambers [Local – 03 ] |  | 2026-10-29 → 2026-11-05 (+7d) |  | 55.1d → 49.1d |
| CON-LEG101-LR-2640 | Installation of Wash out chambers [Local – 03 ] |  | 2026-10-28 → 2026-11-04 (+7d) |  | 55.1d → 49.1d |
| 6 | **Public Water Utility Distribution** |  | 2026-10-31 → 2026-11-07 (+7d) |  |  |
| 1 | **Valves/Chamber** |  | 2026-10-31 → 2026-11-07 (+7d) |  |  |
| CON-LEG101-LR-15110 | Installation of Air Valve chambers [Local – 03 ] |  | 2026-10-31 → 2026-11-07 (+7d) |  | 55.1d → 49.1d |
| 1 | **Electrical Works** |  | 2027-06-12 → 2027-06-19 (+7d) |  |  |
| 3 | **Low Voltage** |  | 2027-06-12 → 2027-06-19 (+7d) |  |  |
| CON-LEG101-LR-7820 | Excavation works for Low Voltage Cables [Local – 03 ] | 2027-05-08 → 2027-05-19 (+11d) | 2027-05-25 → 2027-06-01 (+7d) |  | -115.6d → -128.95d |
| CON-LEG101-LR-7920 | Installation of Low Voltage Cables [Local – 03 ] | 2027-05-26 → 2027-06-02 (+7d) | 2027-06-08 → 2027-06-15 (+7d) |  | -115.6d → -128.95d |
| CON-LEG101-LR-8800 | Installation of Earthing System [Local – 03 ] | 2027-06-09 → 2027-06-16 (+7d) | 2027-06-12 → 2027-06-19 (+7d) |  | -115.6d → -128.95d |
| 10 | **Telecommunications** |  | 2027-07-15 → 2027-07-22 (+7d) |  |  |
| CON-LEG101-LR-8870 | Installation of Sand and soil encased duct banks for primary network [Local – 03 ] |  | 2027-06-08 → 2027-06-15 (+7d) |  | -112.5d → -125.85d |
| CON-LEG101-LR-9070 | Installation of Sand encased duct banks for secondary network [Local – 03 ] | 2027-06-13 → 2027-06-20 (+7d) | 2027-06-20 → 2027-06-27 (+7d) |  | -115.6d → -128.95d |
| CON-LEG101-LR-9170 | Installation of Sand and soil encased duct banks, for combined network of primary and secondary [Local – 03 ] | 2027-06-21 → 2027-06-28 (+7d) | 2027-07-10 → 2027-07-17 (+7d) |  | -115.6d → -128.95d |
| CON-LEG101-LR-9270 | Installation of Concrete encased duct banks for for combined network of primary and secondary [Local – 03 ] | 2027-07-11 → 2027-07-18 (+7d) | 2027-07-15 → 2027-07-22 (+7d) |  | -115.6d → -128.95d |
| 11 | **CCTV feeding system and GSM** |  | 2027-06-27 → 2027-07-04 (+7d) |  |  |
| CON-LEG101-LR-9980 | Installation of Short Range wireless point to point wireless bridge [Local – 03 ] |  | 2027-06-27 → 2027-07-04 (+7d) |  | 19.1d → 20.7d |
| CON-LEG101-LR-8590 | Excavation works for Low Voltage Cables for CCTV feeding system and GSM [Local – 03 ] |  | 2027-06-21 → 2027-06-28 (+7d) |  | -5.6d → -4d |
| CON-LEG101-LR-8660 | Installation of Low Voltage Cables for CCTV feeding system and GSM [Local – 03 ] |  | 2027-06-23 → 2027-06-30 (+7d) |  | 19.1d → 20.7d |
| CON-LEG101-LR-9480 | Installation of 8POE ports Industrial Switches for remote poles [Local – 03 ] |  | 2027-06-23 → 2027-06-30 (+7d) |  | 19.1d → 20.7d |
| CON-LEG101-LR-9650 | Installation of IP Outdoor CCTV POE Camera,5 MP, Metal Housing [Local – 03 ] |  | 2027-06-24 → 2027-07-01 (+7d) |  | 19.1d → 20.7d |
| CON-LEG101-LR-9730 | Installation of Outdoor PTZ IP66 [Local – 03 ] |  | 2027-06-26 → 2027-07-03 (+7d) |  | 19.1d → 20.7d |
| 12 | **Earthing System** | 2027-07-26 → 2027-08-02 (+7d) | 2027-08-02 → 2027-08-09 (+7d) |  |  |
| CON-LEG101-LR-15170 | Installation of Earthing for Distribution panels,SL feeder pillars, KWH, Unit substations and RMU [Local – 03 ] | 2027-07-26 → 2027-08-02 (+7d) | 2027-08-02 → 2027-08-09 (+7d) |  | -5.6d → -4d |
| 9 | **Road Lighting** |  | 2027-07-25 → 2027-08-01 (+7d) |  |  |
| CON-LEG101-LR-8120 | Installation of Lighting poles [Local – 03 ] |  | 2027-06-07 → 2027-06-14 (+7d) |  | -87.5d → -95.45d |
| CON-LEG101-LR-7440 | Installation of Unit Substation Including concrete foundations and fencing [Local – 03 ] |  | 2027-06-30 → 2027-07-07 (+7d) |  | -5.6d → -4d |

| ID | Task | Start | Finish | Total float |
| --- | --- | --- | --- | --- |
| CON-LEG101-LR-8220 | Installation of Street Lighting Luminaire [Local – 03 ] | 2027-06-07 → 2027-06-14 (+7d) | 2027-06-15 → 2027-06-22 (+7d) | -0.1d → 1.5d |
| CON-LEG101-LR-7520 | Installation of Ring Main Unit RMU [Local – 03 ] | 2027-07-01 → 2027-07-08 (+7d) | 2027-07-18 → 2027-07-25 (+7d) | -5.6d → -4d |
| CON-LEG101-LR-8370 | Installation of Earthing for Streetlighting feeders for every end pole circuits. [Local – 03 ] | 2027-07-19 → 2027-07-26 (+7d) | 2027-07-25 → 2027-08-01 (+7d) | -5.6d → -4d |
| 4 | **Local – 04** |  | 2027-09-18 → 2027-09-26 (+8d) |  |
| 5 | **TSE Network** |  | 2027-04-13 → 2027-04-20 (+7d) |  |
| 2 | **Pipe Work** |  | 2027-01-03 → 2027-01-10 (+7d) |  |
| CON-LEG101-LR-1350 | Excavation for TSE Network [Local – 04 ] |  | 2026-12-03 → 2026-12-10 (+7d) | -42.24d → -48.24d |
| CON-LEG101-LR-1470 | Granular bedding for TSE Network [Local – 04 ] |  | 2026-12-05 → 2026-12-12 (+7d) | -42.24d → -48.24d |
| CON-LEG101-LR-1580 | Installation of Pipe for TSE Network [Local – 04 ] |  | 2026-12-12 → 2026-12-19 (+7d) | -42.24d → -48.24d |
| CON-LEG101-LR-1910 | Granular Surround for TSE Network [Local – 04 ] |  | 2026-12-26 → 2027-01-02 (+7d) | -42.24d → -48.24d |
| CON-LEG101-LR-2020 | Installation of Micron Marker Magnetic Tape [Local – 04 ] |  | 2026-12-27 → 2027-01-03 (+7d) | -42.24d → -48.24d |
| CON-LEG101-LR-2130 | Backfilling to Subgrade Elevation [Local – 04 ] |  | 2027-01-03 → 2027-01-10 (+7d) | -42.24d → -48.24d |
| CON-LEG101-LR-1690 | Testing for TSE Network [Local – 04 ] | 2026-12-12 → 2026-12-19 (+7d) | 2026-12-19 → 2026-12-26 (+7d) | -42.24d → -48.24d |
| CON-LEG101-LR-1810 | Concrete encasement, pipe dia 110 mm [Local – 04 ] | 2026-12-19 → 2026-12-26 (+7d) | 2026-12-22 → 2026-12-29 (+7d) | -42.24d → -48.24d |
| 1 | **Valves/Chamber** | 2026-12-27 → 2027-01-03 (+7d) | 2027-04-13 → 2027-04-20 (+7d) |  |
| CON-LEG101-LR-2730 | Installation of Air Valve chambers [Local – 04 ] | 2026-12-27 → 2027-01-03 (+7d) | 2027-01-20 → 2027-01-27 (+7d) | -26.48d → -32.48d |
| CON-LEG101-LR-15060 | Installation of Wash-out Valve chambers [Local – 04 ] | 2027-01-20 → 2027-01-27 (+7d) | 2027-02-18 → 2027-02-27 (+9d) | -26.48d → -32.48d |
| CON-LEG101-LR-2240 | Installation of Gate (Sluice) valves (Direct buried) [Local – 04 ] | 2027-01-20 → 2027-01-27 (+7d) | 2027-01-31 → 2027-02-07 (+7d) | -14.48d → -20.48d |
| CON-LEG101-LR-2350 | Installation of Wash-out Valves [Local – 04 ] | 2027-02-18 → 2027-02-27 (+9d) | 2027-03-09 → 2027-03-16 (+7d) | -26.48d → -32.48d |
| CON-LEG101-LR-2430 | Installation of Air Valves [Local – 04 ] | 2027-03-09 → 2027-03-16 (+7d) | 2027-03-27 → 2027-04-03 (+7d) | -26.48d → -32.48d |
| CON-LEG101-LR-2510 | Installation of Fire Hydrant [Local – 04 ] | 2027-03-27 → 2027-04-03 (+7d) | 2027-04-13 → 2027-04-20 (+7d) | -26.48d → -32.48d |
| 6 | **Public Water Utility Distribution** |  | 2027-03-29 → 2027-04-05 (+7d) |  |
| 2 | **Pipe Work** |  | 2027-01-03 → 2027-01-10 (+7d) |  |
| CON-LEG101-LR-10090 | Excavation for Public Water Utility Distribution Piping [Local – 04 ] |  | 2026-12-05 → 2026-12-12 (+7d) | -42.2d → -48.2d |
| CON-LEG101-LR-10190 | Granular bedding for Public Water Utility Distribution Piping [Local – 04 ] |  | 2026-12-06 → 2026-12-13 (+7d) | -42.2d → -48.2d |
| CON-LEG101-LR-10290 | Installation of Pipe for Public Water Utility Distribution Piping [Local – 04 ] |  | 2026-12-13 → 2026-12-20 (+7d) | -42.2d → -48.2d |
| CON-LEG101-LR-10590 | Granular Surround for Public Water Utility Distribution Piping [Local – 04 ] |  | 2026-12-26 → 2027-01-02 (+7d) | -42.2d → -48.2d |
| CON-LEG101-LR-10390 | Testing for Public Water Utility Distribution Piping [Local – 04 ] | 2026-12-13 → 2026-12-20 (+7d) | 2026-12-19 → 2026-12-26 (+7d) | -42.2d → -48.2d |
| CON-LEG101-LR-10490 | Concrete encasement, pipe dia 110 mm [Local – 04 ] | 2026-12-19 → 2026-12-26 (+7d) | 2026-12-22 → 2026-12-29 (+7d) | -42.2d → -48.2d |
| CON-LEG101-LR-10690 | Installation of Micron Marker Magnetic Tape [Local – 04 ] | 2026-12-26 → 2027-01-02 (+7d) | 2026-12-29 → 2027-01-05 (+7d) | -42.2d → -48.2d |
| CON-LEG101-LR-10790 | Backfilling to Subgrade Elevation [Local – 04 ] | 2026-12-29 → 2027-01-05 (+7d) | 2027-01-03 → 2027-01-10 (+7d) | -42.2d → -48.2d |
| 1 | **Valves/Chamber** | 2027-02-18 → 2027-02-27 (+9d) | 2027-03-29 → 2027-04-05 (+7d) |  |
| CON-LEG101-LR-1280 | Installation of Air Valve chambers [Local – 04 ] | 2027-02-18 → 2027-02-27 (+9d) | 2027-03-15 → 2027-03-22 (+7d) | 72.52d → 66.52d |
| CON-LEG101-LR-1050 | Installation of Gate (Sluice) valves (Direct buried) [Local – 04 ] | 2027-03-15 → 2027-03-22 (+7d) | 2027-03-22 → 2027-03-29 (+7d) | 72.52d → 66.52d |
| CON-LEG101-LR-1180 | Installation of Air Valves [Local – 04 ] | 2027-03-22 → 2027-03-29 (+7d) | 2027-03-29 → 2027-04-05 (+7d) | 72.52d → 66.52d |
| 8 | **Electrical Works** | 2027-05-09 → 2027-05-20 (+11d) | 2027-06-27 → 2027-07-04 (+7d) |  |
| 3 | **Low Voltage** | 2027-05-09 → 2027-05-20 (+11d) | 2027-06-27 → 2027-07-04 (+7d) |  |
| CON-LEG101-LR-7830 | Excavation works for Low Voltage Cables [Local – 04 ] | 2027-05-09 → 2027-05-20 (+11d) | 2027-05-27 → 2027-06-03 (+7d) | -145d → -151d |
| CON-LEG101-LR-8030 | Installation of Low Voltage Cables Duct Banks [Local – 04 ] | 2027-05-29 → 2027-06-05 (+7d) | 2027-06-08 → 2027-06-15 (+7d) | -145d → -151d |
| CON-LEG101-LR-7930 | Installation of Low Voltage Cables [Local – 04 ] | 2027-06-09 → 2027-06-16 (+7d) | 2027-06-23 → 2027-06-30 (+7d) | -84d → -90d |
| CON-LEG101-LR-8810 | Installation of Earthing System [Local – 04 ] | 2027-06-24 → 2027-07-01 (+7d) | 2027-06-27 → 2027-07-04 (+7d) | -36.6d → -35d |
| 10 | **Telecommunications** | 2027-06-09 → 2027-06-16 (+7d) | 2027-09-02 → 2027-09-09 (+7d) |  |
| CON-LEG101-LR-8880 | Installation of Sand and soil encased duct banks for primary network [Local – 04 ] | 2027-06-09 → 2027-06-16 (+7d) | 2027-06-28 → 2027-07-05 (+7d) | -145d → -151d |
| CON-LEG101-LR-8980 | Installation of Concrete encased duct banks for primary network [Local – 04 ] | 2027-06-29 → 2027-07-06 (+7d) | 2027-07-05 → 2027-07-12 (+7d) | -145d → -151d |
| CON-LEG101-LR-9080 | Installation of Sand encased duct banks for secondary network [Local – 04 ] | 2027-07-06 → 2027-07-13 (+7d) | 2027-07-13 → 2027-07-20 (+7d) | -145d → -151d |
| CON-LEG101-LR-9180 | Installation of Sand and soil encased duct banks, for combined network of primary and secondary [Local – 04 ] | 2027-07-14 → 2027-07-21 (+7d) | 2027-08-03 → 2027-08-10 (+7d) | -145d → -151d |
| CON-LEG101-LR-9280 | Installation of Concrete encased duct banks for for combined network of primary and secondary [Local – 04 ] | 2027-08-04 → 2027-08-11 (+7d) | 2027-08-09 → 2027-08-16 (+7d) | -145d → -151d |
| CON-LEG101-LR-9380 | Installation of Reinforced concrete manhole [Local – 04 ] | 2027-08-10 → 2027-08-17 (+7d) | 2027-09-02 → 2027-09-09 (+7d) | -145d → -151d |
| 11 | **CCTV feeding system and GSM** | 2027-06-29 → 2027-07-06 (+7d) | 2027-09-08 → 2027-09-15 (+7d) |  |
| CON-LEG101-LR-8600 | Excavation works for Low Voltage Cables for CCTV feeding system and GSM [Local – 04 ] | 2027-06-29 → 2027-07-06 (+7d) | 2027-07-12 → 2027-07-19 (+7d) | -37.6d → -36d |
| CON-LEG101-LR-8670 | Installation of Low Voltage Cables for CCTV feeding system and GSM [Local – 04 ] | 2027-07-13 → 2027-07-20 (+7d) | 2027-07-27 → 2027-08-03 (+7d) | -37.6d → -36d |
| CON-LEG101-LR-9490 | Installation of 8POE ports Industrial Switches for remote poles [Local – 04 ] | 2027-07-28 → 2027-08-04 (+7d) | 2027-08-04 → 2027-08-11 (+7d) | -37.6d → -36d |
| CON-LEG101-LR-9660 | Installation of IP Outdoor CCTV POE Camera,5 MP, Metal Housing [Local – 04 ] | 2027-08-05 → 2027-08-12 (+7d) | 2027-08-14 → 2027-08-21 (+7d) | -37.6d → -36d |
| CON-LEG101-LR-9740 | Installation of Outdoor PTZ IP66 [Local – 04 ] | 2027-08-15 → 2027-08-22 (+7d) | 2027-08-25 → 2027-09-01 (+7d) | -37.6d → -36d |
| CON-LEG101-LR-9990 | Installation of Short Range wireless point to point wireless bridge [Local – 04 ] | 2027-08-26 → 2027-09-02 (+7d) | 2027-09-08 → 2027-09-15 (+7d) | -37.6d → -36d |
| 12 | **Earthing System** | 2027-09-09 → 2027-09-16 (+7d) | 2027-09-18 → 2027-09-26 (+8d) |  |
| CON-LEG101-LR-15160 | Installation of Earthing for Distribution panels,SL feeder pillars, KWH, Unit substations and RMU [Local – 04 ] | 2027-09-09 → 2027-09-16 (+7d) | 2027-09-18 → 2027-09-26 (+8d) | -37.6d → -36d |
| 9 | **Road Lighting** | 2027-06-07 → 2027-06-14 (+7d) | 2027-08-12 → 2027-08-19 (+7d) |  |
| CON-LEG101-LR-8130 | Installation of Lighting poles [Local – 04 ] | 2027-06-07 → 2027-06-14 (+7d) | 2027-06-28 → 2027-07-05 (+7d) | -87.5d → -93.5d |
| CON-LEG101-LR-8230 | Installation of Street Lighting Luminaire [Local – 04 ] | 2027-06-28 → 2027-07-05 (+7d) | 2027-07-05 → 2027-07-12 (+7d) | -8.1d → -6.5d |
| CON-LEG101-LR-7450 | Installation of Unit Substation Including concrete foundations and fencing [Local – 04 ] | 2027-07-13 → 2027-07-20 (+7d) | 2027-07-20 → 2027-07-27 (+7d) | -14.6d → -13d |
| CON-LEG101-LR-7530 | Installation of Ring Main Unit RMU [Local – 04 ] | 2027-07-21 → 2027-07-28 (+7d) | 2027-08-05 → 2027-08-12 (+7d) | -14.6d → -13d |
| CON-LEG101-LR-8380 | Installation of Earthing for Streetlighting feeders for every end pole circuits. [Local – 04 ] | 2027-08-07 → 2027-08-14 (+7d) | 2027-08-12 → 2027-08-19 (+7d) | -14.6d → -13d |
| 5 | **Local – 05** |  | 2027-07-15 → 2027-07-22 (+7d) |  |
| 5 | **TSE Network** |  | 2026-11-14 → 2026-11-21 (+7d) |  |
| 1 | **Valves/Chamber** |  | 2026-11-14 → 2026-11-21 (+7d) |  |
| CON-LEG101-LR-2740 | Installation of Air Valve chambers [Local – 05 ] |  | 2026-11-14 → 2026-11-21 (+7d) | 183.84d → 177.84d |
| CON-LEG101-LR-2660 | Installation of Wash out chambers [Local – 05 ] |  | 2026-11-12 → 2026-11-19 (+7d) | 183.84d → 177.84d |
| 6 | **Public Water Utility Distribution** |  | 2026-11-15 → 2026-11-22 (+7d) |  |
| 1 | **Valves/Chamber** |  | 2026-11-15 → 2026-11-22 (+7d) |  |

| ID | Task | Start | Finish | Complete | Total float |
| --- | --- | --- | --- | --- | --- |
| CON-LEG101-LR-1240 | Installation of Wash out chambers [Local – 05 ] |  | 2026-11-15 → 2026-11-22 (+7d) |  | 217.24d → 218.84d |
| 1 | **Electrical Works** |  | 2027-05-19 → 2027-05-26 (+7d) |  |  |
| 3 | **Low Voltage** |  | 2027-05-19 → 2027-05-26 (+7d) |  |  |
| CON-LEG101-LR-8820 | Installation of Earthing System [Local – 05 ] | 2027-05-13 → 2027-05-25 (+12d) | 2027-05-19 → 2027-05-26 (+7d) |  | 31d → 25d |
| 10 | **Telecommunications** |  | 2027-05-31 → 2027-06-07 (+7d) |  |  |
| CON-LEG101-LR-9390 | Installation of Reinforced concrete manhole [Local – 05 ] |  | 2027-05-31 → 2027-06-07 (+7d) |  | 22.2d → 16.2d |
| CON-LEG101-LR-9090 | Installation of Sand encased duct banks for secondary network [Local – 05 ] |  | 2027-05-23 → 2027-05-30 (+7d) |  | 22.2d → 16.2d |
| CON-LEG101-LR-9190 | Installation of Sand and soil encased duct banks, for combined network of primary and secondary [Local – 05 ] |  | 2027-05-30 → 2027-06-06 (+7d) |  | 22.2d → 16.2d |
| 11 | **CCTV feeding system and GSM** |  | 2027-06-07 → 2027-06-14 (+7d) |  |  |
| CON-LEG101-LR-10000 | Installation of Short Range wireless point to point wireless bridge [Local – 05 ] |  | 2027-06-07 → 2027-06-14 (+7d) |  | 48.4d → 50d |
| CON-LEG101-LR-8610 | Excavation works for Low Voltage Cables for CCTV feeding system and GSM [Local – 05 ] |  | 2027-05-13 → 2027-05-25 (+12d) | 80% → 90% | 52.7d → 54.7d |
| CON-LEG101-LR-8680 | Installation of Low Voltage Cables for CCTV feeding system and GSM [Local – 05 ] |  | 2027-05-19 → 2027-05-25 (+6d) |  | 56.6d → 58.6d |
| CON-LEG101-LR-9440 | Installation of Fiber Optic Patch Panel 12 port [Local – 05 ] |  | 2027-05-19 → 2027-05-26 (+7d) |  | 56.6d → 58.6d |
| CON-LEG101-LR-9500 | Installation of 8POE ports Industrial Switches for remote poles [Local – 05 ] |  | 2027-05-20 → 2027-05-26 (+6d) |  | 56.6d → 58.6d |
| CON-LEG101-LR-9530 | Installation of Core Switch [Local – 05 ] |  | 2027-05-20 → 2027-05-27 (+7d) |  | 56.6d → 58.6d |
| CON-LEG101-LR-9550 | Installation of Access Switch 48 port [Local – 05 ] |  | 2027-05-22 → 2027-05-27 (+5d) |  | 56.6d → 58.6d |
| CON-LEG101-LR-9580 | Installation of Server [Local – 05 ] |  | 2027-05-22 → 2027-05-29 (+7d) |  | 56.6d → 58.6d |
| CON-LEG101-LR-9670 | Installation of IP Outdoor CCTV POE Camera,5 MP, Metal Housing [Local – 05 ] |  | 2027-06-05 → 2027-06-12 (+7d) |  | 48.4d → 50d |
| CON-LEG101-LR-9750 | Installation of Outdoor PTZ IP66 [Local – 05 ] |  | 2027-06-05 → 2027-06-12 (+7d) |  | 48.4d → 50d |
| CON-LEG101-LR-9860 | Installation of Horizontal Power Distribution Unit (min 8 outlets) [Local – 05 ] |  | 2027-06-07 → 2027-06-14 (+7d) |  | 48.4d → 50d |
| CON-LEG101-LR-9600 | Installation of Stand rack 42U- 19" [Local – 05 ] | 2027-05-31 → 2027-06-07 (+7d) | 2027-06-03 → 2027-06-10 (+7d) |  | 48.4d → 50d |
| CON-LEG101-LR-9810 | Installation of LED Screen 43" (24/7 operation) with Ethernet decoders [Local – 05 ] | 2027-06-05 → 2027-06-12 (+7d) | 2027-06-07 → 2027-06-14 (+7d) |  | 48.4d → 50d |
| 12 | **Earthing System** | 2027-07-12 → 2027-07-19 (+7d) | 2027-07-14 → 2027-07-21 (+7d) |  |  |
| CON-LEG101-LR-15150 | Installation of Earthing for Distribution panels,SL feeder pillars, KWH, Unit substations and RMU [Local – 05 ] | 2027-07-12 → 2027-07-19 (+7d) | 2027-07-14 → 2027-07-21 (+7d) |  | 19d → 20.6d |
| 9 | **Road Lighting** |  | 2027-07-15 → 2027-07-22 (+7d) |  |  |
| CON-LEG101-LR-7460 | Installation of Unit Substation Including concrete foundations and fencing [Local – 05 ] |  | 2027-07-04 → 2027-07-11 (+7d) |  | 18d → 19.6d |
| CON-LEG101-LR-8390 | Installation of Earthing for Streetlighting feeders for every end pole circuits. [Local – 05 ] |  | 2027-07-15 → 2027-07-22 (+7d) |  | 18d → 19.6d |
| CON-LEG101-LR-7540 | Installation of Ring Main Unit RMU [Local – 05 ] | 2027-07-04 → 2027-07-11 (+7d) | 2027-07-12 → 2027-07-19 (+7d) |  | 18d → 19.6d |
| 6 | **Local – 06** |  | 2027-07-10 → 2027-07-17 (+7d) |  |  |
| 10 | **Telecommunications** |  | 2027-05-19 → 2027-05-26 (+7d) |  |  |
| CON-LEG101-LR-9100 | Installation of Sand encased duct banks for secondary network [Local – 06 ] |  | 2027-05-13 → 2027-05-25 (+12d) |  | 49.05d → 46.05d |
| CON-LEG101-LR-9200 | Installation of Sand and soil encased duct banks, for combined network of primary and secondary [Local – 06 ] |  | 2027-05-19 → 2027-05-26 (+7d) |  | 49.05d → 46.05d |
| 11 | **CCTV feeding system and GSM** |  | 2027-05-19 → 2027-05-26 (+7d) |  |  |
| CON-LEG101-LR-10010 | Installation of Short Range wireless point to point wireless bridge [Local – 06 ] |  | 2027-05-19 → 2027-05-26 (+7d) |  | 63.6d → 65.2d |
| CON-LEG101-LR-9510 | Installation of 8POE ports Industrial Switches for remote poles [Local – 06 ] |  | 2027-05-13 → 2027-05-25 (+12d) |  | 57.9d → 59.5d |
| CON-LEG101-LR-9680 | Installation of IP Outdoor CCTV POE Camera,5 MP, Metal Housing [Local – 06 ] |  | 2027-05-19 → 2027-05-26 (+7d) |  | 63.6d → 65.2d |
| CON-LEG101-LR-9760 | Installation of Outdoor PTZ IP66 [Local – 06 ] |  | 2027-05-19 → 2027-05-26 (+7d) |  | 63.6d → 65.2d |
| 12 | **Earthing System** | 2027-07-06 → 2027-07-13 (+7d) | 2027-07-10 → 2027-07-17 (+7d) |  |  |
| CON-LEG101-LR-15140 | Installation of Earthing for Distribution panels,SL feeder pillars, KWH, Unit substations and RMU [Local – 06 ] | 2027-07-06 → 2027-07-13 (+7d) | 2027-07-10 → 2027-07-17 (+7d) |  | 23.1d → 24.7d |
| 9 | **Road Lighting** |  | 2027-07-08 → 2027-07-15 (+7d) |  |  |
| CON-LEG101-LR-7470 | Installation of Unit Substation Including concrete foundations and fencing [Local – 06 ] |  | 2027-07-01 → 2027-07-08 (+7d) |  | 23.1d → 24.7d |
| CON-LEG101-LR-8400 | Installation of Earthing for Streetlighting feeders for every end pole circuits. [Local – 06 ] |  | 2027-07-08 → 2027-07-15 (+7d) |  | 24d → 25.6d |
| CON-LEG101-LR-7550 | Installation of Ring Main Unit RMU [Local – 06 ] | 2027-07-01 → 2027-07-08 (+7d) | 2027-07-06 → 2027-07-13 (+7d) |  | 23.1d → 24.7d |
| 7 | **Local – 07** |  | 2027-07-11 → 2027-07-18 (+7d) |  |  |
| 11 | **CCTV feeding system and GSM** |  | 2027-05-13 → 2027-05-25 (+12d) |  |  |
| CON-LEG101-LR-10020 | Installation of Short Range wireless point to point wireless bridge [Local – 07 ] |  | 2027-05-13 → 2027-05-25 (+12d) |  | 56.5d → 58.1d |
| 12 | **Earthing System** | 2027-07-06 → 2027-07-13 (+7d) | 2027-07-11 → 2027-07-18 (+7d) |  |  |
| CON-LEG101-LR-15130 | Installation of Earthing for Distribution panels,SL feeder pillars, KWH, Unit substations and RMU [Local – 07 ] | 2027-07-06 → 2027-07-13 (+7d) | 2027-07-11 → 2027-07-18 (+7d) |  | 21.7d → 23.3d |
| 9 | **Road Lighting** |  | 2027-07-08 → 2027-07-15 (+7d) |  |  |
| CON-LEG101-LR-7480 | Installation of Unit Substation Including concrete foundations and fencing [Local – 07 ] |  | 2027-07-01 → 2027-07-08 (+7d) |  | 21.7d → 23.3d |
| CON-LEG101-LR-8410 | Installation of Earthing for Streetlighting feeders for every end pole circuits. [Local – 07 ] |  | 2027-07-08 → 2027-07-15 (+7d) |  | 23.7d → 25.3d |
| CON-LEG101-LR-7560 | Installation of Ring Main Unit RMU [Local – 07 ] | 2027-07-01 → 2027-07-08 (+7d) | 2027-07-06 → 2027-07-13 (+7d) |  | 21.7d → 23.3d |
| 8 | **Local – 08** |  | 2027-07-10 → 2027-07-17 (+7d) |  |  |
| 5 | **TSE Network** |  | 2026-11-14 → 2026-11-21 (+7d) |  |  |
| 1 | **Valves/Chamber** |  | 2026-11-14 → 2026-11-21 (+7d) |  |  |
| CON-LEG101-LR-2750 | Installation of Air Valve chambers [Local – 08 ] |  | 2026-11-14 → 2026-11-21 (+7d) |  | 210.9d → 205.6d |
| CON-LEG101-LR-2670 | Installation of Wash out chambers [Local – 08 ] |  | 2026-11-12 → 2026-11-19 (+7d) |  | 210.9d → 205.6d |
| 1 | **Electrical Works** |  | 2027-06-06 → 2027-06-13 (+7d) |  |  |
| 3 | **Low Voltage** |  | 2027-06-06 → 2027-06-13 (+7d) |  |  |
| CON-LEG101-LR-8500 | Installation of Low Voltage Distribution Panel [Local – 08 ] | 2027-05-30 → 2027-06-06 (+7d) | 2027-06-06 → 2027-06-13 (+7d) |  | 40.2d → 35.2d |
| 10 | **Telecommunications** |  | 2027-06-08 → 2027-06-15 (+7d) |  |  |
| CON-LEG101-LR-8920 | Installation of Sand and soil encased duct banks for primary network [Local – 08 ] |  | 2026-11-14 → 2026-10-07 A (-38d) | 70% → 100% | 200.6d → none |
| CON-LEG101-LR-9120 | Installation of Sand encased duct banks for secondary network [Local – 08 ] |  | 2027-01-12 → 2026-10-07 A (-97d) | 70% → 100% | 154.5d → none |
| CON-LEG101-LR-9220 | Installation of Sand and soil encased duct banks, for combined network of primary and secondary [Local – 08 ] |  | 2027-01-13 → 2026-10-07 A (-98d) | 70% → 100% | 154.5d → none |
| CON-LEG101-LR-9420 | Installation of Reinforced concrete manhole [Local – 08 ] |  | 2027-06-08 → 2027-06-15 (+7d) | 70% → 75% | 40.2d → 35.2d |
| 11 | **CCTV feeding system and GSM** |  | 2027-06-07 → 2027-06-14 (+7d) |  |  |
| CON-LEG101-LR-10030 | Installation of Short Range wireless point to point wireless bridge [Local – 08 ] |  | 2027-06-07 → 2027-06-14 (+7d) |  | 41.3d → 36d |
| CON-LEG101-LR-9770 | Installation of Outdoor PTZ IP66 [Local – 08 ] |  | 2027-01-11 → 2027-01-18 (+7d) |  | 151d → 145.7d |
| CON-LEG101-LR-9820 | Installation of LED Screen 43" (24/7 operation) with Ethernet decoders [Local – 08 ] | 2027-05-30 → 2027-06-06 (+7d) | 2027-06-06 → 2027-06-13 (+7d) |  | 41.3d → 36d |
| 12 | **Earthing System** | 2027-07-07 → 2027-07-14 (+7d) | 2027-07-10 → 2027-07-17 (+7d) |  |  |

| ID | Task | Start | Finish | Complete | Total float |
| --- | --- | --- | --- | --- | --- |
| CON-LEG101-LR-8320 | Installation of Earthing for Distribution panels,SL feeder pillars, KWH, Unit substations and RMU [Local – 08 ] | 2027-07-07 → 2027-07-14 (+7d) | 2027-07-10 → 2027-07-17 (+7d) |  | 15.6d → 10.3d |
| 9 | **Road Lighting** |  | 2027-07-10 → 2027-07-17 (+7d) |  |  |
| CON-LEG101-LR-8170 | Installation of Lighting poles [Local – 08 ] |  | 2027-06-29 → 2027-07-06 (+7d) |  | -55.2d → -61.2d |
| CON-LEG101-LR-7490 | Installation of Unit Substation Including concrete foundations and fencing [Local – 08 ] |  | 2027-07-01 → 2027-07-08 (+7d) |  | 15.6d → 10.3d |
| CON-LEG101-LR-8270 | Installation of Street Lighting Luminaire [Local – 08 ] |  | 2027-06-29 → 2027-07-06 (+7d) |  | 29.8d → 31.4d |
| CON-LEG101-LR-8470 | Installation of Street Lighting feeder pillars / Lighting panels [Local – 08 ] |  | 2027-07-07 → 2027-07-14 (+7d) |  | 15.6d → 10.3d |
| CON-LEG101-LR-7570 | Installation of Ring Main Unit RMU [Local – 08 ] | 2027-07-03 → 2027-07-10 (+7d) | 2027-07-06 → 2027-07-13 (+7d) |  | 15.6d → 10.3d |
| CON-LEG101-LR-8420 | Installation of Earthing for Streetlighting feeders for every end pole circuits. [Local – 08 ] | 2027-07-07 → 2027-07-14 (+7d) | 2027-07-10 → 2027-07-17 (+7d) |  | 23d → 24.6d |
| 3 | **Bridge** |  | 2027-08-15 → 2027-08-22 (+7d) |  |  |
| 3 | **Bridge Finishing** |  | 2027-08-15 → 2027-08-22 (+7d) |  |  |
| CON-LEG101-BR-1160 | Membrane waterproofing for concert in touch with soil and membrane waterproofing for bridge slab [Bridge ] | 2026-10-07 → 2026-10-14 (+7d) | 2026-10-18 → 2026-10-25 (+7d) |  | 123d → 117d |
| CON-LEG101-BR-1170 | Placing of Protective Coating for Concrete Surfaces [Bridge ] | 2026-10-19 → 2026-10-26 (+7d) | 2026-11-02 → 2026-11-09 (+7d) |  | 123d → 117d |
| CON-LEG101-BR-1260 | Asphalt Wearing Cource | 2026-11-03 → 2026-11-10 (+7d) | 2026-11-05 → 2026-11-12 (+7d) |  | 123d → 117d |
| CON-LEG101-BR-1190 | Installation of expansion joints for bridges [Bridge ] | 2026-11-07 → 2026-11-14 (+7d) | 2026-11-22 → 2026-11-29 (+7d) |  | 123d → 117d |
| CON-LEG101-BR-1200 | Installation of Guard Rail [Bridge ] | 2027-06-29 → 2027-07-06 (+7d) | 2027-07-22 → 2027-07-29 (+7d) |  | -55.2d → -61.2d |
| CON-LEG101-BR-1210 | Installation of GRP Panel [Bridge ] | 2027-07-22 → 2027-07-29 (+7d) | 2027-08-03 → 2027-08-10 (+7d) |  | -55.2d → -61.2d |
| CON-LEG101-BR-1220 | Installation of Logo MODON [Bridge ] | 2027-08-03 → 2027-08-10 (+7d) | 2027-08-15 → 2027-08-22 (+7d) |  | -55.2d → -61.2d |
| 4 | **Outside Boundary Area (Tie-in Lines)** |  | 2027-06-06 → 2027-06-13 (+7d) |  |  |
| 4 | **Sanitary Sewerage** |  | 2026-10-08 → 2026-10-15 (+7d) |  |  |
| 1 | **Manhole** |  | 2026-10-08 → 2026-10-15 (+7d) |  |  |
| CON-LEG101-OBA-1150 | Installation of Fiberglass Manholes [Outside Boundary Area ] |  | 2026-10-08 → 2026-10-15 (+7d) |  | 232.13d → 226.13d |
| 3 | **TSE Network** |  | 2027-06-06 → 2027-06-13 (+7d) |  |  |
| 1 | **Valves/Chamber** |  | 2027-06-06 → 2027-06-13 (+7d) |  |  |
| CON-LEG101-OBA-1070 | Installation of Butterfly valves (In Chamber) [Outside Boundary Area ] |  | 2027-06-06 → 2027-06-13 (+7d) |  | 35.18d → 29.18d |
| CON-LEG101-OBA-1500 | Installation of Valve Chamber [Outside Boundary Area ] |  | 2027-06-06 → 2027-06-13 (+7d) |  | 35.18d → 29.18d |
| 5 | **Public Water Utility Distribution** |  | 2026-10-10 → 2026-10-17 (+7d) |  |  |
| 3 | **Public Water Utility Distribution (0 - 900) m** |  | 2026-10-08 → 2026-10-15 (+7d) |  |  |
| 1 | **Valves/Chamber** |  | 2026-10-08 → 2026-10-15 (+7d) |  |  |
| CON-LEG101-OBA-1420 | Installation of Air Valve chambers [Outside Boundary Area ] 0 - 900 m |  | 2026-10-08 → 2026-10-15 (+7d) |  | 231.21d → 225.21d |
| CON-LEG101-OBA-1430 | Installation of Air Valves [Outside Boundary Area ] 0 - 900 m |  | 2026-10-08 → 2026-10-15 (+7d) |  | 231.21d → 225.21d |
| 1 | **Public Water Utility Distribution (901 - 1800) m** |  | 2026-10-10 → 2026-10-17 (+7d) |  |  |
| 1 | **Valves/Chamber** |  | 2026-10-10 → 2026-10-17 (+7d) |  |  |
| CON-LEG101-OBA-1440 | Installation of Air Valve chambers [Outside Boundary Area ] 901 - 1800 m |  | 2026-10-08 → 2026-10-15 (+7d) |  | 231.21d → 225.21d |
| CON-LEG101-OBA-1450 | Installation of Air Valves [Outside Boundary Area ] 901 - 1800 m |  | 2026-10-10 → 2026-10-17 (+7d) |  | 231.21d → 225.21d |
| CON-LEG101-OBA-1510 | Installation of Butterfly valves, on pipe with diameter 400 mm |  | 2026-10-10 → 2026-10-17 (+7d) |  | 231.21d → 225.21d |
| 8 | **Roads Finishing** |  | 2027-11-24 → 2027-12-01 (+7d) |  |  |
| 1 | **Local – 01** |  | 2027-10-30 → 2027-11-03 (+4d) |  |  |
| 1 | **LOCAL - 01 Segment-01 (From 0+000 to 1+066)** |  | 2027-10-07 → 2027-10-05 (-2d) |  |  |
| 7 | **Concrete Curb** |  | 2027-07-18 → 2027-07-22 (+4d) |  |  |
| CON-LEG101-LR-6180 | Installation of Precast Concrete Curb [Local – 01 Segment-01] |  | 2027-07-18 → 2027-07-22 (+4d) | 85% → 90% | -96.2d → -100.45d |
| 1 | **Asphalt Wearing Course** |  | 2027-07-25 → 2027-07-31 (+6d) |  |  |
| CON-LEG101-LR-5980 | Tack coat (RC2) [Local – 01 Segment-01] |  | 2027-07-21 → 2027-07-26 (+5d) |  | -44.5d → -48.75d |
| CON-LEG101-LR-6080 | Bituminous wearing course [Local – 01 Segment-01] |  | 2027-07-25 → 2027-07-31 (+6d) |  | -44.5d → -48.75d |
| 3 | **Interlocking block roads/on-street parking** |  | 2027-09-28 → 2026-10-12 (-351d) |  |  |
| CON-LEG101-LR-6380 | Interlocking block pavers for roads/on-street parking [Local – 01 Segment-01] |  | 2027-09-28 → 2026-10-12 A (-351d) | 60% → 100% | -37.6d → none |
| 4 | **Interlocking block sidewalk/footpath** |  | 2027-10-07 → 2027-10-05 (-2d) |  |  |
| CON-LEG101-LR-6280 | Interlocking block pavers for sidewalk/footpath [Local – 01 Segment-01] |  | 2027-10-07 → 2027-10-05 (-2d) |  | -37.6d → -36d |
| 5 | **Pavement Markings** | 2027-08-09 → 2027-08-14 (+5d) | 2027-08-28 → 2027-09-01 (+4d) |  |  |
| CON-LEG101-LR-6580 | Pavement Markings (White Paint/Yellow Paint) [Local – 01 Segment-01] | 2027-08-09 → 2027-08-14 (+5d) | 2027-08-16 → 2027-08-21 (+5d) |  | -56.9d → -61.15d |
| CON-LEG101-LR-6680 | Handicap ramp [Local – 01 Segment-01] | 2027-08-16 → 2027-08-21 (+5d) | 2027-08-28 → 2027-09-01 (+4d) |  | -51.9d → -56.15d |
| 6 | **Traffic Signs** |  | 2027-09-15 → 2027-09-21 (+6d) |  |  |
| CON-LEG101-LR-6780 | Installation of Traffic Signs [Local – 01 Segment-01] |  | 2027-09-15 → 2027-09-21 (+6d) |  | -31.75d → -36d |
| CON-LEG101-LR-6480 | Retroreflective Plastic Cones [Local – 01 Segment-01] | 2027-08-28 → 2027-09-01 (+4d) | 2027-09-07 → 2027-09-12 (+5d) |  | -50.9d → -55.15d |
| 2 | **LOCAL - 01 Segment-02 (From 1+066 to 2+133)** |  | 2027-10-05 → 2027-10-10 (+5d) |  |  |
| 1 | **Asphalt Wearing Course** |  | 2027-07-29 → 2027-08-03 (+5d) |  |  |
| CON-LEG101-LR-5990 | Tack coat (RC2) [Local – 01 Segment-02] |  | 2027-07-27 → 2027-08-01 (+5d) |  | -43.3d → -45.55d |
| CON-LEG101-LR-6090 | Bituminous wearing course [Local – 01 Segment-02] |  | 2027-07-29 → 2027-08-03 (+5d) |  | -43.3d → -45.55d |
| 5 | **Pavement Markings** | 2027-08-16 → 2027-08-21 (+5d) | 2027-09-14 → 2027-09-19 (+5d) |  |  |
| CON-LEG101-LR-6590 | Pavement Markings (White Paint/Yellow Paint) [Local – 01 Segment-02] | 2027-08-16 → 2027-08-21 (+5d) | 2027-09-02 → 2027-09-07 (+5d) |  | -56.9d → -61.15d |
| CON-LEG101-LR-6690 | Handicap ramp [Local – 01 Segment-02] | 2027-09-02 → 2027-09-07 (+5d) | 2027-09-14 → 2027-09-19 (+5d) |  | -56.9d → -61.15d |
| 6 | **Traffic Signs** |  | 2027-10-05 → 2027-10-10 (+5d) |  |  |
| CON-LEG101-LR-6790 | Installation of Traffic Signs [Local – 01 Segment-02] |  | 2027-10-05 → 2027-10-10 (+5d) |  | -42.15d → -46.4d |
| CON-LEG101-LR-6490 | Retroreflective Plastic Cones [Local – 01 Segment-02] | 2027-09-14 → 2027-09-19 (+5d) | 2027-09-29 → 2027-10-04 (+5d) |  | -56.9d → -61.15d |
| 3 | **LOCAL - 01 Segment-03 (From 2+133 to 3+200)** |  | 2027-10-30 → 2027-11-03 (+4d) |  |  |
| 1 | **Asphalt Wearing Course** | 2027-07-29 → 2027-08-03 (+5d) | 2027-08-08 → 2027-08-12 (+4d) |  |  |
| CON-LEG101-LR-6000 | Tack coat (RC2) [Local – 01 Segment-03] | 2027-07-29 → 2027-08-03 (+5d) | 2027-08-03 → 2027-08-08 (+5d) |  | -43.3d → -45.55d |
| CON-LEG101-LR-6100 | Bituminous wearing course [Local – 01 Segment-03] | 2027-08-03 → 2027-08-08 (+5d) | 2027-08-08 → 2027-08-12 (+4d) |  | -43.3d → -45.55d |
| 5 | **Pavement Markings** | 2027-09-02 → 2027-09-07 (+5d) | 2027-09-29 → 2027-10-04 (+5d) |  |  |
| CON-LEG101-LR-6600 | Pavement Markings (White Paint/Yellow Paint) [Local – 01 Segment-03] | 2027-09-02 → 2027-09-07 (+5d) | 2027-09-14 → 2027-09-19 (+5d) |  | -56.9d → -61.15d |
| CON-LEG101-LR-6700 | Handicap ramp [Local – 01 Segment-03] | 2027-09-14 → 2027-09-19 (+5d) | 2027-09-29 → 2027-10-04 (+5d) |  | -56.9d → -61.15d |

| ID | Task | Start | Finish | Complete | Total float |
| --- | --- | --- | --- | --- | --- |
| 6 | **Traffic Signs** |  | 2027-10-30 → 2027-11-03 (+4d) |  |  |
| CON-LEG101-LR-6800 | Installation of Traffic Signs [Local – 01 Segment-03] |  | 2027-10-30 → 2027-11-03 (+4d) |  | -56.9d → -61.15d |
| CON-LEG101-LR-6500 | Retroreflective Plastic Cones [Local – 01 Segment-03] | 2027-09-29 → 2027-10-04 (+5d) | 2027-10-23 → 2027-10-27 (+4d) |  | -56.9d → -61.15d |
| 2 | **Local – 02** |  | 2027-10-26 → 2027-10-31 (+5d) |  |  |
| 1 | **Asphalt Wearing Course** |  | 2027-08-10 → 2027-08-14 (+4d) |  |  |
| CON-LEG101-LR-6010 | Tack coat (RC2) [Local – 02 ] |  | 2027-08-09 → 2027-08-12 (+3d) | 50% → 90% | -43.3d → -45.55d |
| CON-LEG101-LR-6110 | Bituminous wearing course [Local – 02 ] |  | 2027-08-10 → 2027-08-14 (+4d) | 50% → 90% | -43.3d → -45.55d |
| 5 | **Pavement Markings** | 2027-09-14 → 2027-09-19 (+5d) | 2027-10-09 → 2027-10-13 (+4d) |  |  |
| CON-LEG101-LR-6610 | Pavement Markings (White Paint/Yellow Paint) [Local – 02 ] | 2027-09-14 → 2027-09-19 (+5d) | 2027-09-27 → 2027-10-02 (+5d) |  | -53.85d → -58.1d |
| CON-LEG101-LR-6710 | Handicap ramp [Local – 02 ] | 2027-09-27 → 2027-10-02 (+5d) | 2027-10-09 → 2027-10-13 (+4d) |  | -53.85d → -58.1d |
| 6 | **Traffic Signs** |  | 2027-10-26 → 2027-10-31 (+5d) |  |  |
| CON-LEG101-LR-6810 | Installation of Traffic Signs [Local – 02 ] |  | 2027-10-26 → 2027-10-31 (+5d) |  | -53.85d → -58.1d |
| CON-LEG101-LR-6510 | Retroreflective Plastic Cones [Local – 02 ] | 2027-10-09 → 2027-10-13 (+4d) | 2027-10-20 → 2027-10-25 (+5d) |  | -53.85d → -58.1d |
| 3 | **Local – 03** |  | 2027-10-07 → 2027-10-12 (+5d) |  |  |
| 7 | **Concrete Curb** |  | 2027-07-31 → 2027-08-15 (+15d) |  |  |
| CON-LEG101-LR-6220 | Installation of Precast Concrete Curb [Local – 03 ] |  | 2027-07-31 → 2027-08-15 (+15d) | 40% → 50% | -115.6d → -128.95d |
| 1 | **Asphalt Wearing Course** | 2027-08-10 → 2027-08-15 (+5d) | 2027-08-16 → 2027-08-21 (+5d) |  |  |
| CON-LEG101-LR-6020 | Tack coat (RC2) [Local – 03 ] | 2027-08-10 → 2027-08-15 (+5d) | 2027-08-12 → 2027-08-17 (+5d) |  | -43.3d → -47.35d |
| CON-LEG101-LR-6120 | Bituminous wearing course [Local – 03 ] | 2027-08-12 → 2027-08-17 (+5d) | 2027-08-16 → 2027-08-21 (+5d) |  | -43.3d → -47.35d |
| 3 | **Interlocking block roads/on-street parking** | 2027-08-16 → 2027-08-21 (+5d) | 2027-09-09 → 2027-09-14 (+5d) |  |  |
| CON-LEG101-LR-6420 | Interlocking block pavers for roads/on-street parking [Local – 03 ] | 2027-08-16 → 2027-08-21 (+5d) | 2027-09-09 → 2027-09-14 (+5d) |  | -36.3d → -40.35d |
| 4 | **Interlocking block sidewalk/footpath** | 2027-09-09 → 2027-09-14 (+5d) | 2027-10-05 → 2027-10-10 (+5d) |  |  |
| CON-LEG101-LR-6320 | Interlocking block pavers for sidewalk/footpath [Local – 03 ] | 2027-09-09 → 2027-09-14 (+5d) | 2027-10-05 → 2027-10-10 (+5d) |  | -36.3d → -40.35d |
| 5 | **Pavement Markings** | 2027-08-16 → 2027-08-21 (+5d) | 2027-09-08 → 2027-09-13 (+5d) |  |  |
| CON-LEG101-LR-6620 | Pavement Markings (White Paint/Yellow Paint) [Local – 03 ] | 2027-08-16 → 2027-08-21 (+5d) | 2027-08-28 → 2027-09-01 (+4d) |  | -38.3d → -42.35d |
| CON-LEG101-LR-6720 | Handicap ramp [Local – 03 ] | 2027-08-28 → 2027-09-01 (+4d) | 2027-09-08 → 2027-09-13 (+5d) |  | -38.3d → -42.35d |
| 6 | **Traffic Signs** |  | 2027-10-07 → 2027-10-12 (+5d) |  |  |
| CON-LEG101-LR-6820 | Installation of Traffic Signs [Local – 03 ] |  | 2027-10-07 → 2027-10-12 (+5d) |  | -38.3d → -42.35d |
| CON-LEG101-LR-6520 | Retroreflective Plastic Cones [Local – 03 ] | 2027-09-08 → 2027-09-13 (+5d) | 2027-09-20 → 2027-09-26 (+6d) |  | -38.3d → -42.35d |
| 4 | **Local – 04** | 2027-09-04 → 2027-09-11 (+7d) | 2027-11-24 → 2027-12-01 (+7d) |  |  |
| 7 | **Concrete Curb** | 2027-09-04 → 2027-09-11 (+7d) | 2027-09-28 → 2027-10-05 (+7d) |  |  |
| CON-LEG101-LR-6230 | Installation of Precast Concrete Curb [Local – 04 ] | 2027-09-04 → 2027-09-11 (+7d) | 2027-09-28 → 2027-10-05 (+7d) |  | -145d → -151d |
| 1 | **Asphalt Wearing Course** | 2027-09-29 → 2027-10-06 (+7d) | 2027-10-04 → 2027-10-11 (+7d) |  |  |
| CON-LEG101-LR-6030 | Tack coat (RC2) [Local – 04 ] | 2027-09-29 → 2027-10-06 (+7d) | 2027-09-30 → 2027-10-07 (+7d) |  | -79.4d → -85.4d |
| CON-LEG101-LR-6130 | Bituminous wearing course [Local – 04 ] | 2027-10-02 → 2027-10-09 (+7d) | 2027-10-04 → 2027-10-11 (+7d) |  | -79.4d → -85.4d |
| 3 | **Interlocking block roads/on-street parking** | 2027-10-05 → 2027-10-12 (+7d) | 2027-10-26 → 2027-11-02 (+7d) |  |  |
| CON-LEG101-LR-6430 | Interlocking block pavers for roads/on-street parking [Local – 04 ] | 2027-10-05 → 2027-10-12 (+7d) | 2027-10-26 → 2027-11-02 (+7d) |  | -73.4d → -79.4d |
| 4 | **Interlocking block sidewalk/footpath** | 2027-10-27 → 2027-11-03 (+7d) | 2027-11-17 → 2027-11-24 (+7d) |  |  |
| CON-LEG101-LR-6330 | Interlocking block pavers for sidewalk/footpath [Local – 04 ] | 2027-10-27 → 2027-11-03 (+7d) | 2027-11-17 → 2027-11-24 (+7d) |  | -73.4d → -79.4d |
| 5 | **Pavement Markings** | 2027-10-05 → 2027-10-12 (+7d) | 2027-10-27 → 2027-11-03 (+7d) |  |  |
| CON-LEG101-LR-6630 | Pavement Markings (White Paint/Yellow Paint) [Local – 04 ] | 2027-10-05 → 2027-10-12 (+7d) | 2027-10-16 → 2027-10-23 (+7d) |  | -79.4d → -85.4d |
| CON-LEG101-LR-6730 | Handicap ramp [Local – 04 ] | 2027-10-17 → 2027-10-24 (+7d) | 2027-10-27 → 2027-11-03 (+7d) |  | -79.4d → -85.4d |
| 6 | **Traffic Signs** | 2027-10-28 → 2027-11-04 (+7d) | 2027-11-24 → 2027-12-01 (+7d) |  |  |
| CON-LEG101-LR-6530 | Retroreflective Plastic Cones [Local – 04 ] | 2027-10-28 → 2027-11-04 (+7d) | 2027-11-08 → 2027-11-15 (+7d) |  | -79.4d → -85.4d |
| CON-LEG101-LR-6830 | Installation of Traffic Signs [Local – 04 ] | 2027-11-09 → 2027-11-16 (+7d) | 2027-11-24 → 2027-12-01 (+7d) |  | -79.4d → -85.4d |
| 5 | **Local – 05** |  | 2027-11-08 → 2027-11-14 (+6d) |  |  |
| 1 | **Asphalt Wearing Course** |  | 2027-10-06 → 2027-10-12 (+6d) |  |  |
| CON-LEG101-LR-6040 | Tack coat (RC2) [Local – 05 ] |  | 2027-10-05 → 2027-10-12 (+7d) | 60% → 85% | -70.15d → -71.9d |
| CON-LEG101-LR-6140 | Bituminous wearing course [Local – 05 ] |  | 2027-10-06 → 2027-10-12 (+6d) | 60% → 85% | -70.15d → -71.9d |
| 5 | **Pavement Markings** | 2027-10-07 → 2027-10-12 (+5d) | 2027-10-30 → 2027-11-04 (+5d) |  |  |
| CON-LEG101-LR-6640 | Pavement Markings (White Paint/Yellow Paint) [Local – 05 ] | 2027-10-07 → 2027-10-12 (+5d) | 2027-10-18 → 2027-10-24 (+6d) |  | -65.15d → -69.9d |
| CON-LEG101-LR-6740 | Handicap ramp [Local – 05 ] | 2027-10-19 → 2027-10-24 (+5d) | 2027-10-30 → 2027-11-04 (+5d) |  | -65.15d → -69.9d |
| 6 | **Traffic Signs** |  | 2027-11-08 → 2027-11-14 (+6d) |  |  |
| CON-LEG101-LR-6840 | Installation of Traffic Signs [Local – 05 ] |  | 2027-11-08 → 2027-11-14 (+6d) |  | -65.15d → -69.9d |
| CON-LEG101-LR-6540 | Retroreflective Plastic Cones [Local – 05 ] | 2027-10-31 → 2027-11-04 (+4d) | 2027-11-04 → 2027-11-10 (+6d) |  | -65.15d → -69.9d |
| 6 | **Local – 06** |  | 2027-11-14 → 2027-11-16 (+2d) |  |  |
| 1 | **Asphalt Wearing Course** | 2027-10-07 → 2026-10-06 (-366d) | 2027-10-12 → 2027-10-14 (+2d) |  |  |
| CON-LEG101-LR-6050 | Tack coat (RC2) [Local – 06 ] | 2027-10-07 → 2026-10-06 A (-366d) | 2027-10-10 → 2027-10-13 (+3d) | 0% → 60% | -70.15d → -71.9d |
| CON-LEG101-LR-6150 | Bituminous wearing course [Local – 06 ] | 2027-10-11 → 2026-10-06 A (-370d) | 2027-10-12 → 2027-10-14 (+2d) | 0% → 60% | -70.15d → -71.9d |
| 5 | **Pavement Markings** | 2027-10-13 → 2027-10-14 (+1d) | 2027-11-04 → 2027-11-07 (+3d) |  |  |
| CON-LEG101-LR-6650 | Pavement Markings (White Paint/Yellow Paint) [Local – 06 ] | 2027-10-13 → 2027-10-14 (+1d) | 2027-10-24 → 2027-10-26 (+2d) |  | -70.15d → -71.9d |
| CON-LEG101-LR-6750 | Handicap ramp [Local – 06 ] | 2027-10-25 → 2027-10-26 (+1d) | 2027-11-04 → 2027-11-07 (+3d) |  | -70.15d → -71.9d |
| 6 | **Traffic Signs** |  | 2027-11-14 → 2027-11-16 (+2d) |  |  |
| CON-LEG101-LR-6850 | Installation of Traffic Signs [Local – 06 ] |  | 2027-11-14 → 2027-11-16 (+2d) |  | -70.15d → -71.9d |
| CON-LEG101-LR-6550 | Retroreflective Plastic Cones [Local – 06 ] | 2027-11-06 → 2027-11-07 (+1d) | 2027-11-09 → 2027-11-11 (+2d) |  | -70.15d → -71.9d |
| 7 | **Local – 07** |  | 2027-10-18 → 2027-10-25 (+7d) |  |  |
| 1 | **Asphalt Wearing Course** |  | 2027-09-30 → 2027-10-07 (+7d) |  |  |
| CON-LEG101-LR-6060 | Tack coat (RC2) [Local – 07 ] |  | 2027-09-29 → 2027-10-06 (+7d) |  | -47.1d → -53.1d |
| CON-LEG101-LR-6160 | Bituminous wearing course [Local – 07 ] |  | 2027-09-30 → 2027-10-07 (+7d) |  | -47.1d → -53.1d |
| 5 | **Pavement Markings** | 2027-09-30 → 2027-10-07 (+7d) | 2027-10-10 → 2027-10-17 (+7d) |  |  |

| ID | Task | Start | Finish | Complete | Total float |
| --- | --- | --- | --- | --- | --- |
| CON-LEG101-LR-6660 | Pavement Markings (White Paint/Yellow Paint) [Local – 07 ] | 2027-09-30 → 2027-10-07 (+7d) | 2027-10-05 → 2027-10-12 (+7d) |  | -47.1d → -53.1d |
| CON-LEG101-LR-6760 | Handicap ramp [Local – 07 ] | 2027-10-05 → 2027-10-12 (+7d) | 2027-10-10 → 2027-10-17 (+7d) |  | -47.1d → -53.1d |
| 6 | **Traffic Signs** |  | 2027-10-18 → 2027-10-25 (+7d) |  |  |
| CON-LEG101-LR-6860 | Installation of Traffic Signs [Local – 07 ] |  | 2027-10-18 → 2027-10-25 (+7d) |  | -47.1d → -53.1d |
| CON-LEG101-LR-6560 | Retroreflective Plastic Cones [Local – 07 ] | 2027-10-10 → 2027-10-17 (+7d) | 2027-10-14 → 2027-10-21 (+7d) |  | -47.1d → -53.1d |
| 8 | **Local – 08** |  | 2027-10-25 → 2027-10-31 (+6d) |  |  |
| 1 | **Asphalt Wearing Course** | 2027-09-29 → 2027-10-06 (+7d) | 2027-10-04 → 2027-10-11 (+7d) |  |  |
| CON-LEG101-LR-6070 | Tack coat (RC2) [Local – 08 ] | 2027-09-29 → 2027-10-06 (+7d) | 2027-09-30 → 2027-10-07 (+7d) |  | -53d → -58.3d |
| CON-LEG101-LR-6170 | Bituminous wearing course [Local – 08 ] | 2027-10-02 → 2027-10-09 (+7d) | 2027-10-04 → 2027-10-11 (+7d) |  | -53d → -58.3d |
| 5 | **Pavement Markings** | 2027-10-05 → 2027-10-12 (+7d) | 2027-10-13 → 2027-10-20 (+7d) |  |  |
| CON-LEG101-LR-6670 | Pavement Markings (White Paint/Yellow Paint) [Local – 08 ] | 2027-10-05 → 2027-10-12 (+7d) | 2027-10-09 → 2027-10-16 (+7d) |  | -53d → -58.3d |
| CON-LEG101-LR-6770 | Handicap ramp [Local – 08 ] | 2027-10-10 → 2027-10-17 (+7d) | 2027-10-13 → 2027-10-20 (+7d) |  | -53d → -58.3d |
| 6 | **Traffic Signs** |  | 2027-10-25 → 2027-10-31 (+6d) |  |  |
| CON-LEG101-LR-6870 | Installation of Traffic Signs [Local – 08 ] |  | 2027-10-25 → 2027-10-31 (+6d) | 60% → 65% | -53d → -58.3d |
| CON-LEG101-LR-6570 | Retroreflective Plastic Cones [Local – 08 ] | 2027-10-14 → 2027-10-21 (+7d) | 2027-10-18 → 2027-10-25 (+7d) |  | -53d → -58.3d |
| 5 | **Fence and Gate** |  | 2027-11-20 → 2027-11-27 (+7d) |  |  |
| 1 | **Fence and Gate Segment -01 (From 0+000 to 0+671)** |  | 2027-01-31 → 2027-02-07 (+7d) |  |  |
| 1 | **Fence** |  | 2027-01-31 → 2027-02-07 (+7d) |  |  |
| CON-LEG101-FG-1000 | Excavation for Fences [Fence and Gate Segment -01] |  | 2026-10-11 → 2026-10-18 (+7d) |  | 34.48d → 29.68d |
| CON-LEG101-FG-1100 | Lean concrete for Foundation [Fence and Gate Segment -01] |  | 2026-10-15 → 2026-10-22 (+7d) |  | 34.48d → 29.68d |
| CON-LEG101-FG-1150 | Reinforced concrete Structure [Fence and Gate Segment -01] |  | 2026-11-05 → 2026-11-12 (+7d) |  | 34.48d → 29.68d |
| CON-LEG101-FG-1200 | Spraying of bituminous paint waterproofing for R.C foundation [Fence and Gate Segment -01] | 2026-11-05 → 2026-11-12 (+7d) | 2026-11-17 → 2026-11-24 (+7d) |  | 34.48d → 29.68d |
| CON-LEG101-FG-1260 | Embankments to the Fences [Fence and Gate Segment -01] | 2026-11-17 → 2026-11-24 (+7d) | 2026-11-26 → 2026-12-03 (+7d) |  | 34.48d → 29.68d |
| CON-LEG101-FG-1050 | Concrete Works for Ground Beam for Fences [Fence and Gate Segment -01] | 2026-11-26 → 2026-12-03 (+7d) | 2026-12-20 → 2026-12-27 (+7d) |  | 34.48d → 29.68d |
| CON-LEG101-FG-1420 | Plster Works for Fences [Fence and Gate Segment -01] | 2026-12-20 → 2026-12-27 (+7d) | 2027-01-03 → 2027-01-10 (+7d) |  | 34.48d → 29.68d |
| CON-LEG101-FG-1280 | Installation of Metal Fence [Fence and Gate Segment -01] | 2027-01-03 → 2027-01-10 (+7d) | 2027-01-19 → 2027-01-26 (+7d) |  | 34.48d → 29.68d |
| CON-LEG101-FG-1340 | Paint On Cement Plaster [Fence and Gate Segment -01] | 2027-01-19 → 2027-01-26 (+7d) | 2027-01-31 → 2027-02-07 (+7d) |  | 34.48d → 29.68d |
| 2 | **Fence and Gate Segment -02 (From 0+671 to 1+342)** |  | 2027-04-06 → 2027-04-13 (+7d) |  |  |
| 1 | **Fence** |  | 2027-04-06 → 2027-04-13 (+7d) |  |  |
| CON-LEG101-FG-1010 | Excavation for Fences [Fence and Gate Segment -02] |  | 2027-02-03 → 2027-02-15 (+12d) |  | 34.48d → 29.68d |
| CON-LEG101-FG-1110 | Lean concrete for Foundation [Fence and Gate Segment -02] |  | 2027-02-04 → 2027-02-16 (+12d) |  | 34.48d → 29.68d |
| CON-LEG101-FG-1160 | Reinforced concrete Structure [Fence and Gate Segment -02] |  | 2027-02-15 → 2027-02-23 (+8d) |  | 34.48d → 29.68d |
| CON-LEG101-FG-1210 | Spraying of bituminous paint waterproofing for R.C foundation [Fence and Gate Segment -02] |  | 2027-02-17 → 2027-02-25 (+8d) |  | 34.48d → 29.68d |
| CON-LEG101-FG-1330 | Embankments to the Fences [Fence and Gate Segment -02] |  | 2027-02-20 → 2027-02-28 (+8d) |  | 34.48d → 29.68d |
| CON-LEG101-FG-1060 | Concrete Works for Ground Beam for Fences [Fence and Gate Segment -02] |  | 2027-02-27 → 2027-03-06 (+7d) |  | 34.48d → 29.68d |
| CON-LEG101-FG-1290 | Installation of Metal Fence [Fence and Gate Segment -02] |  | 2027-03-23 → 2027-03-30 (+7d) |  | 34.48d → 29.68d |
| CON-LEG101-FG-1430 | Plster Works for Fences [Fence and Gate Segment -02] | 2027-02-27 → 2027-03-06 (+7d) | 2027-03-13 → 2027-03-20 (+7d) |  | 34.48d → 29.68d |
| CON-LEG101-FG-1350 | Paint On Cement Plaster [Fence and Gate Segment -02] | 2027-03-23 → 2027-03-30 (+7d) | 2027-04-06 → 2027-04-13 (+7d) |  | 34.48d → 29.68d |
| 3 | **Fence and Gate Segment -03 (From 1+342 to 2+014)** |  | 2027-06-07 → 2027-06-12 (+5d) |  |  |
| 1 | **Fence** |  | 2027-04-26 → 2027-05-01 (+5d) |  |  |
| CON-LEG101-FG-1300 | Installation of Metal Fence [Fence and Gate Segment -03] |  | 2027-04-17 → 2027-04-21 (+4d) |  | 34.48d → 29.68d |
| CON-LEG101-FG-1440 | Plster Works for Fences [Fence and Gate Segment -03] |  | 2027-04-15 → 2027-04-21 (+6d) | 30% → 40% | 34.48d → 29.68d |
| CON-LEG101-FG-1360 | Paint On Cement Plaster [Fence and Gate Segment -03] |  | 2027-04-26 → 2027-05-01 (+5d) | 30% → 40% | 66.08d → 62.48d |
| 2 | **Gate** | 2027-04-17 → 2027-04-21 (+4d) | 2027-06-07 → 2027-06-12 (+5d) |  |  |
| CON-LEG101-FG-1250 | Installation of Main Entrance Motorized Gate [Fence and Gate Segment -03] | 2027-04-17 → 2027-04-21 (+4d) | 2027-05-10 → 2027-05-19 (+9d) |  | 34.48d → 29.68d |
| CON-LEG101-FG-1270 | Installation of Pedestrain Gate [Fence and Gate Segment -03] | 2027-05-10 → 2027-05-19 (+9d) | 2027-06-07 → 2027-06-12 (+5d) |  | 34.48d → 29.68d |
| 4 | **Fence and Gate Segment -04 (From 2+014 to 2+685)** |  | 2027-08-15 → 2027-08-22 (+7d) |  |  |
| 1 | **Fence** |  | 2027-08-15 → 2027-08-22 (+7d) |  |  |
| CON-LEG101-FG-1370 | Paint On Cement Plaster [Fence and Gate Segment -04] |  | 2027-08-15 → 2027-08-22 (+7d) |  | -24.2d → -30.2d |
| CON-LEG101-FG-1450 | Plster Works for Fences [Fence and Gate Segment -04] |  | 2027-06-07 → 2027-06-13 (+6d) |  | 34.48d → 29.18d |
| 5 | **Fence and Gate Segment -05 (From 2+685 to 3+356)** | 2027-08-15 → 2027-08-22 (+7d) | 2027-11-20 → 2027-11-27 (+7d) |  |  |
| 1 | **Fence** | 2027-08-15 → 2027-08-22 (+7d) | 2027-11-20 → 2027-11-27 (+7d) |  |  |
| CON-LEG101-FG-1040 | Excavation for Fences [Fence and Gate Segment -05] | 2027-08-15 → 2027-08-22 (+7d) | 2027-08-26 → 2027-09-02 (+7d) |  | -24.2d → -30.2d |
| CON-LEG101-FG-1140 | Lean concrete for Foundation [Fence and Gate Segment -05] | 2027-08-26 → 2027-09-02 (+7d) | 2027-08-31 → 2027-09-07 (+7d) |  | -24.2d → -30.2d |
| CON-LEG101-FG-1190 | Reinforced concrete Structure [Fence and Gate Segment -05] | 2027-08-31 → 2027-09-07 (+7d) | 2027-09-25 → 2027-10-02 (+7d) |  | -24.2d → -30.2d |
| CON-LEG101-FG-1240 | Spraying of bituminous paint waterproofing for R.C foundation [Fence and Gate Segment -05] | 2027-09-25 → 2027-10-02 (+7d) | 2027-10-06 → 2027-10-13 (+7d) |  | -24.2d → -30.2d |
| CON-LEG101-FG-1410 | Embankments to the Fences [Fence and Gate Segment -05] | 2027-10-06 → 2027-10-13 (+7d) | 2027-10-11 → 2027-10-18 (+7d) |  | -24.2d → -30.2d |
| CON-LEG101-FG-1090 | Concrete Works for Ground Beam for Fences [Fence and Gate Segment -05] | 2027-10-11 → 2027-10-18 (+7d) | 2027-10-28 → 2027-11-04 (+7d) |  | -24.2d → -30.2d |
| CON-LEG101-FG-1460 | Plster Works for Fences [Fence and Gate Segment -05] | 2027-10-28 → 2027-11-04 (+7d) | 2027-11-04 → 2027-11-11 (+7d) |  | -24.2d → -30.2d |
| CON-LEG101-FG-1320 | Installation of Metal Fence [Fence and Gate Segment -05] | 2027-11-04 → 2027-11-11 (+7d) | 2027-11-13 → 2027-11-20 (+7d) |  | -24.2d → -30.2d |
| CON-LEG101-FG-1380 | Paint On Cement Plaster [Fence and Gate Segment -05] | 2027-11-13 → 2027-11-20 (+7d) | 2027-11-20 → 2027-11-27 (+7d) |  | -24.2d → -30.2d |
| 2 | **Roundabout & Landscape** | 2027-07-18 → 2027-07-22 (+4d) | 2028-04-04 → 2028-04-11 (+7d) |  |  |
| 10 | **Local – 01** | 2027-07-18 → 2027-07-22 (+4d) | 2028-01-31 → 2028-02-05 (+5d) |  |  |
| 1 | **LOCAL - 01 Segment-01 (From 0+000 to 1+066)** | 2027-07-18 → 2027-07-22 (+4d) | 2027-12-30 → 2028-01-04 (+5d) |  |  |
| 3 | **Irrigation Works** | 2027-07-18 → 2027-07-22 (+4d) | 2027-11-14 → 2027-11-18 (+4d) |  |  |
| 1 | **Secondary Irrigation** | 2027-07-18 → 2027-07-22 (+4d) | 2027-11-14 → 2027-11-18 (+4d) |  |  |
| 1 | **Pipe Work** | 2027-07-18 → 2027-07-22 (+4d) | 2027-09-27 → 2027-10-02 (+5d) |  |  |
| CON-LEG101-LR-4870 | Excavation for Secondary Irrigation [Local – 01 Segment-01] | 2027-07-18 → 2027-07-22 (+4d) | 2027-07-27 → 2027-08-01 (+5d) |  | -96.2d → -100.45d |
| CON-LEG101-LR-4940 | Sand bedding for Secondary Irrigation [Local – 01 Segment-01] | 2027-07-27 → 2027-08-01 (+5d) | 2027-08-02 → 2027-08-07 (+5d) |  | -96.2d → -100.45d |
| CON-LEG101-LR-5010 | Installation of Pipe for Secondary Irrigation [Local – 01 Segment-01] | 2027-08-02 → 2027-08-07 (+5d) | 2027-08-14 → 2027-08-18 (+4d) |  | -96.2d → -100.45d |

| ID | Task | Start | Finish | Total float |
| --- | --- | --- | --- | --- |
| CON-LEG101-LR-5080 | Sand Surround for Secondary Irrigation [Local – 01 Segment-01] | 2027-08-14 → 2027-08-18 (+4d) | 2027-08-19 → 2027-08-24 (+5d) | -96.2d → -100.45d |
| CON-LEG101-LR-5150 | Installation of Micron Marker Magnetic Tape [Local – 01 Segment-01] | 2027-08-19 → 2027-08-24 (+5d) | 2027-08-31 → 2027-09-05 (+5d) | -96.2d → -100.45d |
| CON-LEG101-LR-5210 | Backfilling to Subgrade Elevation [Local – 01 Segment-01] | 2027-08-31 → 2027-09-05 (+5d) | 2027-09-06 → 2027-09-11 (+5d) | -96.2d → -100.45d |
| CON-LEG101-LR-5410 | Installation of tubing for risers connections from laterals [Local – 01 Segment-01] | 2027-09-06 → 2027-09-11 (+5d) | 2027-09-27 → 2027-10-02 (+5d) | -96.2d → -100.45d |
| 2 | **Valves and Controller** | 2027-09-27 → 2027-10-02 (+5d) | 2027-11-14 → 2027-11-18 (+4d) |  |
| CON-LEG101-LR-5270 | Installation of Electrical Solenoid Valve [Local – 01 Segment-01] | 2027-09-27 → 2027-10-02 (+5d) | 2027-10-03 → 2027-10-07 (+4d) | -88.2d → -92.45d |
| CON-LEG101-LR-5310 | Installation of quick coupler valve [Local – 01 Segment-01] | 2027-10-03 → 2027-10-07 (+4d) | 2027-10-09 → 2027-10-13 (+4d) | -88.2d → -92.45d |
| CON-LEG101-LR-5350 | Installation of a Flush valve [Local – 01 Segment-01] | 2027-10-09 → 2027-10-13 (+4d) | 2027-10-14 → 2027-10-19 (+5d) | -88.2d → -92.45d |
| CON-LEG101-LR-5470 | Installation of Advanced Irrigation controller [Local – 01 Segment-01] | 2027-10-14 → 2027-10-19 (+5d) | 2027-10-23 → 2027-10-27 (+4d) | -88.2d → -92.45d |
| CON-LEG101-LR-5480 | Install single station decoder for valve connection [Local – 01 Segment-01] | 2027-10-23 → 2027-10-27 (+4d) | 2027-10-31 → 2027-11-04 (+4d) | -88.2d → -92.45d |
| CON-LEG101-LR-5520 | Installation of Decoder cables 12 AWG between valves and controllers [Local – 01 Segment-01] | 2027-10-31 → 2027-11-04 (+4d) | 2027-11-14 → 2027-11-18 (+4d) | -88.2d → -92.45d |
| 14 | **Curbs and edging** | 2027-11-14 → 2027-11-18 (+4d) | 2027-11-16 → 2027-11-21 (+5d) |  |
| CON-LEG101-LR-4790 | Installation of Curbs and edging [Local – 01 Segment-01] | 2027-11-14 → 2027-11-18 (+4d) | 2027-11-16 → 2027-11-21 (+5d) | -88.2d → -92.45d |
| 13 | **Landscape** | 2027-11-16 → 2027-11-21 (+5d) | 2027-12-30 → 2028-01-04 (+5d) |  |
| CON-LEG101-LR-4580 | Site preparation for Planting Area [Local – 01 Segment-01] | 2027-11-16 → 2027-11-21 (+5d) | 2027-11-27 → 2027-12-01 (+4d) | -88.2d → -92.45d |
| CON-LEG101-LR-4650 | Placing Agricutural Soil [Local – 01 Segment-01] | 2027-11-27 → 2027-12-01 (+4d) | 2027-12-07 → 2027-12-12 (+5d) | -88.2d → -92.45d |
| CON-LEG101-LR-4720 | Planting Shrubs And Ground Cover [Local – 01 Segment-01] | 2027-12-07 → 2027-12-12 (+5d) | 2027-12-30 → 2028-01-04 (+5d) | -62.2d → -66.45d |
| 2 | **LOCAL - 01 Segment-02 (From 1+066 to 2+133)** | 2027-09-27 → 2027-10-02 (+5d) | 2028-01-30 → 2028-02-03 (+4d) |  |
| 2 | **Irrigation Works** | 2027-09-27 → 2027-10-02 (+5d) | 2027-12-27 → 2028-01-01 (+5d) |  |
| 1 | **Secondary Irrigation** | 2027-09-27 → 2027-10-02 (+5d) | 2027-12-27 → 2028-01-01 (+5d) |  |
| 1 | **Pipe Work** | 2027-09-27 → 2027-10-02 (+5d) | 2027-11-21 → 2027-11-25 (+4d) |  |
| CON-LEG101-LR-4880 | Excavation for Secondary Irrigation [Local – 01 Segment-02] | 2027-09-27 → 2027-10-02 (+5d) | 2027-10-03 → 2027-10-07 (+4d) | -96.2d → -100.45d |
| CON-LEG101-LR-4950 | Sand bedding for Secondary Irrigation [Local – 01 Segment-02] | 2027-10-03 → 2027-10-07 (+4d) | 2027-10-09 → 2027-10-13 (+4d) | -96.2d → -100.45d |
| CON-LEG101-LR-5020 | Installation of Pipe for Secondary Irrigation [Local – 01 Segment-02] | 2027-10-09 → 2027-10-13 (+4d) | 2027-10-14 → 2027-10-19 (+5d) | -96.2d → -100.45d |
| CON-LEG101-LR-5090 | Sand Surround for Secondary Irrigation [Local – 01 Segment-02] | 2027-10-14 → 2027-10-19 (+5d) | 2027-10-20 → 2027-10-25 (+5d) | -96.2d → -100.45d |
| CON-LEG101-LR-5160 | Installation of Micron Marker Magnetic Tape [Local – 01 Segment-02] | 2027-10-20 → 2027-10-25 (+5d) | 2027-10-26 → 2027-10-31 (+5d) | -96.2d → -100.45d |
| CON-LEG101-LR-5220 | Backfilling to Subgrade Elevation [Local – 01 Segment-02] | 2027-10-26 → 2027-10-31 (+5d) | 2027-11-01 → 2027-11-06 (+5d) | -96.2d → -100.45d |
| CON-LEG101-LR-5420 | Installation of tubing for risers connections from laterals [Local – 01 Segment-02] | 2027-11-01 → 2027-11-06 (+5d) | 2027-11-21 → 2027-11-25 (+4d) | -96.2d → -100.45d |
| 2 | **Valves and Controller** | 2027-12-07 → 2027-12-12 (+5d) | 2027-12-27 → 2028-01-01 (+5d) |  |
| CON-LEG101-LR-5360 | Installation of a Flush valve [Local – 01 Segment-02] | 2027-12-07 → 2027-12-12 (+5d) | 2027-12-13 → 2027-12-18 (+5d) | -88.2d → -92.45d |
| CON-LEG101-LR-5530 | Installation of Decoder cables 12 AWG between valves and controllers [Local – 01 Segment-02] | 2027-12-13 → 2027-12-18 (+5d) | 2027-12-27 → 2028-01-01 (+5d) | -88.2d → -92.45d |
| 14 | **Curbs and edging** | 2027-12-27 → 2028-01-01 (+5d) | 2027-12-29 → 2028-01-03 (+5d) |  |
| CON-LEG101-LR-4800 | Installation of Curbs and edging [Local – 01 Segment-02] | 2027-12-27 → 2028-01-01 (+5d) | 2027-12-29 → 2028-01-03 (+5d) | -88.2d → -92.45d |
| 13 | **Landscape** | 2027-12-29 → 2028-01-03 (+5d) | 2028-01-30 → 2028-02-03 (+4d) |  |
| CON-LEG101-LR-4590 | Site preparation for Planting Area [Local – 01 Segment-02] | 2027-12-29 → 2028-01-03 (+5d) | 2028-01-09 → 2028-01-13 (+4d) | -88.2d → -92.45d |
| CON-LEG101-LR-4660 | Placing Agricutural Soil [Local – 01 Segment-02] | 2028-01-09 → 2028-01-13 (+4d) | 2028-01-19 → 2028-01-24 (+5d) | -88.2d → -92.45d |
| CON-LEG101-LR-4730 | Planting Shrubs And Ground Cover [Local – 01 Segment-02] | 2028-01-19 → 2028-01-24 (+5d) | 2028-01-30 → 2028-02-03 (+4d) | -88.2d → -92.45d |
| 3 | **LOCAL - 01 Segment-03 (From 2+133 to 3+200)** | 2027-11-21 → 2027-11-25 (+4d) | 2028-01-31 → 2028-02-05 (+5d) |  |
| 2 | **Irrigation Works** | 2027-11-21 → 2027-11-25 (+4d) | 2028-01-25 → 2028-01-30 (+5d) |  |
| 1 | **Secondary Irrigation** | 2027-11-21 → 2027-11-25 (+4d) | 2028-01-25 → 2028-01-30 (+5d) |  |
| 1 | **Pipe Work** | 2027-11-21 → 2027-11-25 (+4d) | 2028-01-25 → 2028-01-30 (+5d) |  |
| CON-LEG101-LR-4890 | Excavation for Secondary Irrigation [Local – 01 Segment-03] | 2027-11-21 → 2027-11-25 (+4d) | 2027-11-27 → 2027-12-01 (+4d) | -96.2d → -100.45d |
| CON-LEG101-LR-4960 | Sand bedding for Secondary Irrigation [Local – 01 Segment-03] | 2027-11-27 → 2027-12-01 (+4d) | 2027-12-02 → 2027-12-07 (+5d) | -89.2d → -93.45d |
| CON-LEG101-LR-5030 | Installation of Pipe for Secondary Irrigation [Local – 01 Segment-03] | 2027-12-02 → 2027-12-07 (+5d) | 2027-12-08 → 2027-12-13 (+5d) | -89.2d → -93.45d |
| CON-LEG101-LR-5100 | Sand Surround for Secondary Irrigation [Local – 01 Segment-03] | 2027-12-08 → 2027-12-13 (+5d) | 2027-12-18 → 2027-12-22 (+4d) | -84.2d → -88.45d |
| CON-LEG101-LR-5170 | Installation of Micron Marker Magnetic Tape [Local – 01 Segment-03] | 2027-12-18 → 2027-12-22 (+4d) | 2027-12-27 → 2028-01-01 (+5d) | -84.2d → -88.45d |
| CON-LEG101-LR-5230 | Backfilling to Subgrade Elevation [Local – 01 Segment-03] | 2027-12-27 → 2028-01-01 (+5d) | 2028-01-05 → 2028-01-10 (+5d) | -84.2d → -88.45d |
| CON-LEG101-LR-5430 | Installation of tubing for risers connections from laterals [Local – 01 Segment-03] | 2028-01-05 → 2028-01-10 (+5d) | 2028-01-25 → 2028-01-30 (+5d) | -84.2d → -88.45d |
| 2 | **Valves and Controller** | 2027-12-08 → 2027-12-13 (+5d) | 2027-12-28 → 2028-01-02 (+5d) |  |
| CON-LEG101-LR-5370 | Installation of a Flush valve [Local – 01 Segment-03] | 2027-12-08 → 2027-12-13 (+5d) | 2027-12-14 → 2027-12-19 (+5d) | -89.2d → -93.45d |
| CON-LEG101-LR-5540 | Installation of Decoder cables 12 AWG between valves and controllers [Local – 01 Segment-03] | 2027-12-14 → 2027-12-19 (+5d) | 2027-12-28 → 2028-01-02 (+5d) | -89.2d → -93.45d |
| 14 | **Curbs and edging** | 2027-12-28 → 2028-01-02 (+5d) | 2027-12-30 → 2028-01-04 (+5d) |  |
| CON-LEG101-LR-4810 | Installation of Curbs and edging [Local – 01 Segment-03] | 2027-12-28 → 2028-01-02 (+5d) | 2027-12-30 → 2028-01-04 (+5d) | -89.2d → -93.45d |
| 13 | **Landscape** | 2027-12-30 → 2028-01-04 (+5d) | 2028-01-31 → 2028-02-05 (+5d) |  |
| CON-LEG101-LR-4600 | Site preparation for Planting Area [Local – 01 Segment-03] | 2027-12-30 → 2028-01-04 (+5d) | 2028-01-10 → 2028-01-15 (+5d) | -89.2d → -93.45d |
| CON-LEG101-LR-4670 | Placing Agricutural Soil [Local – 01 Segment-03] | 2028-01-10 → 2028-01-15 (+5d) | 2028-01-20 → 2028-01-25 (+5d) | -89.2d → -93.45d |
| CON-LEG101-LR-4740 | Planting Shrubs And Ground Cover [Local – 01 Segment-03] | 2028-01-20 → 2028-01-25 (+5d) | 2028-01-31 → 2028-02-05 (+5d) | -89.2d → -93.45d |
| 3 | **Local – 02** | 2027-11-27 → 2027-12-01 (+4d) | 2028-02-08 → 2028-02-13 (+5d) |  |
| 3 | **Irrigation Works** | 2027-11-27 → 2027-12-01 (+4d) | 2028-01-27 → 2028-02-01 (+5d) |  |
| 1 | **Secondary Irrigation** | 2027-11-27 → 2027-12-01 (+4d) | 2028-01-27 → 2028-02-01 (+5d) |  |
| 1 | **Pipe Work** | 2027-11-27 → 2027-12-01 (+4d) | 2028-01-27 → 2028-02-01 (+5d) |  |
| CON-LEG101-LR-4900 | Excavation for Secondary Irrigation [Local – 02 ] | 2027-11-27 → 2027-12-01 (+4d) | 2027-12-01 → 2027-12-06 (+5d) | -96.2d → -100.45d |
| CON-LEG101-LR-4970 | Sand bedding for Secondary Irrigation [Local – 02 ] | 2027-12-01 → 2027-12-06 (+5d) | 2027-12-06 → 2027-12-11 (+5d) | -96.2d → -100.45d |
| CON-LEG101-LR-5040 | Installation of Pipe for Secondary Irrigation [Local – 02 ] | 2027-12-06 → 2027-12-11 (+5d) | 2027-12-11 → 2027-12-15 (+4d) | -96.2d → -100.45d |
| CON-LEG101-LR-5110 | Sand Surround for Secondary Irrigation [Local – 02 ] | 2027-12-11 → 2027-12-15 (+4d) | 2027-12-20 → 2027-12-25 (+5d) | -86.2d → -90.45d |
| CON-LEG101-LR-5180 | Installation of Micron Marker Magnetic Tape [Local – 02 ] | 2027-12-20 → 2027-12-25 (+5d) | 2027-12-29 → 2028-01-03 (+5d) | -86.2d → -90.45d |
| CON-LEG101-LR-5240 | Backfilling to Subgrade Elevation [Local – 02 ] | 2027-12-29 → 2028-01-03 (+5d) | 2028-01-10 → 2028-01-15 (+5d) | -86.2d → -90.45d |
| CON-LEG101-LR-5440 | Installation of tubing for risers connections from laterals [Local – 02 ] | 2028-01-10 → 2028-01-15 (+5d) | 2028-01-27 → 2028-02-01 (+5d) | -86.2d → -90.45d |
| 2 | **Valves and Controller** | 2027-12-11 → 2027-12-15 (+4d) | 2028-01-15 → 2028-01-19 (+4d) |  |
| CON-LEG101-LR-5280 | Installation of Electrical Solenoid Valve [Local – 02 ] | 2027-12-11 → 2027-12-15 (+4d) | 2027-12-16 → 2027-12-21 (+5d) | -96.2d → -100.45d |

| ID | Task | Start | Finish | Total float |
| --- | --- | --- | --- | --- |
| CON-LEG101-LR-5320 | Installation of quick coupler valve [Local – 02 ] | 2027-12-16 → 2027-12-21 (+5d) | 2027-12-22 → 2027-12-27 (+5d) | -96.2d → -100.45d |
| CON-LEG101-LR-5380 | Installation of a Flush valve [Local – 02 ] | 2027-12-22 → 2027-12-27 (+5d) | 2027-12-27 → 2028-01-01 (+5d) | -96.2d → -100.45d |
| CON-LEG101-LR-5490 | Install single station decoder for valve connection [Local – 02 ] | 2027-12-27 → 2028-01-01 (+5d) | 2028-01-04 → 2028-01-09 (+5d) | -96.2d → -100.45d |
| CON-LEG101-LR-5550 | Installation of Decoder cables 12 AWG between valves and controllers [Local – 02 ] | 2028-01-04 → 2028-01-09 (+5d) | 2028-01-15 → 2028-01-19 (+4d) | -96.2d → -100.45d |
| 14 | **Curbs and edging** | 2028-01-15 → 2028-01-19 (+4d) | 2028-01-18 → 2028-01-23 (+5d) |  |
| CON-LEG101-LR-4830 | Installation of Curbs and edging [Local – 02 ] | 2028-01-15 → 2028-01-19 (+4d) | 2028-01-18 → 2028-01-23 (+5d) | -96.2d → -100.45d |
| 13 | **Landscape** | 2028-01-18 → 2028-01-23 (+5d) | 2028-02-08 → 2028-02-13 (+5d) |  |
| CON-LEG101-LR-4610 | Site preparation for Planting Area [Local – 02 ] | 2028-01-18 → 2028-01-23 (+5d) | 2028-01-25 → 2028-01-30 (+5d) | -96.2d → -100.45d |
| CON-LEG101-LR-4680 | Placing Agricutural Soil [Local – 02 ] | 2028-01-25 → 2028-01-30 (+5d) | 2028-02-01 → 2028-02-06 (+5d) | -96.2d → -100.45d |
| CON-LEG101-LR-4750 | Planting Shrubs And Ground Cover [Local – 02 ] | 2028-02-01 → 2028-02-06 (+5d) | 2028-02-08 → 2028-02-13 (+5d) | -96.2d → -100.45d |
| 5 | **Local – 04** | 2027-11-27 → 2027-12-01 (+4d) | 2028-01-30 → 2028-02-03 (+4d) |  |
| 2 | **Irrigation Works** | 2027-11-27 → 2027-12-01 (+4d) | 2028-01-16 → 2028-01-20 (+4d) |  |
| 1 | **Secondary Irrigation** | 2027-11-27 → 2027-12-01 (+4d) | 2028-01-16 → 2028-01-20 (+4d) |  |
| 1 | **Pipe Work** | 2027-11-27 → 2027-12-01 (+4d) | 2027-12-30 → 2028-01-04 (+5d) |  |
| CON-LEG101-LR-4910 | Excavation for Secondary Irrigation [Local – 04 ] | 2027-11-27 → 2027-12-01 (+4d) | 2027-11-30 → 2027-12-05 (+5d) | -89.2d → -93.45d |
| CON-LEG101-LR-4980 | Sand bedding for Secondary Irrigation [Local – 04 ] | 2027-11-30 → 2027-12-05 (+5d) | 2027-12-07 → 2027-12-12 (+5d) | -88.2d → -92.45d |
| CON-LEG101-LR-5050 | Installation of Pipe for Secondary Irrigation [Local – 04 ] | 2027-12-07 → 2027-12-12 (+5d) | 2027-12-16 → 2027-12-21 (+5d) | -88.2d → -92.45d |
| CON-LEG101-LR-5120 | Sand Surround for Secondary Irrigation [Local – 04 ] | 2027-12-16 → 2027-12-21 (+5d) | 2027-12-20 → 2027-12-25 (+5d) | -88.2d → -92.45d |
| CON-LEG101-LR-5190 | Installation of Micron Marker Magnetic Tape [Local – 04 ] | 2027-12-20 → 2027-12-25 (+5d) | 2027-12-26 → 2027-12-30 (+4d) | -88.2d → -92.45d |
| CON-LEG101-LR-5250 | Backfilling to Subgrade Elevation [Local – 04 ] | 2027-12-26 → 2027-12-30 (+4d) | 2027-12-28 → 2028-01-02 (+5d) | -88.2d → -92.45d |
| CON-LEG101-LR-5450 | Installation of tubing for risers connections from laterals [Local – 04 ] | 2027-12-28 → 2028-01-02 (+5d) | 2027-12-30 → 2028-01-04 (+5d) | -88.2d → -92.45d |
| 2 | **Valves and Controller** | 2027-12-16 → 2027-12-21 (+5d) | 2028-01-16 → 2028-01-20 (+4d) |  |
| CON-LEG101-LR-5290 | Installation of Electrical Solenoid Valve [Local – 04 ] | 2027-12-16 → 2027-12-21 (+5d) | 2027-12-23 → 2027-12-28 (+5d) | -88.2d → -92.45d |
| CON-LEG101-LR-5330 | Installation of quick coupler valve [Local – 04 ] | 2027-12-23 → 2027-12-28 (+5d) | 2027-12-30 → 2028-01-04 (+5d) | -88.2d → -92.45d |
| CON-LEG101-LR-5390 | Installation of a Flush valve [Local – 04 ] | 2027-12-30 → 2028-01-04 (+5d) | 2028-01-05 → 2028-01-10 (+5d) | -88.2d → -92.45d |
| CON-LEG101-LR-5500 | Install single station decoder for valve connection [Local – 04 ] | 2028-01-05 → 2028-01-10 (+5d) | 2028-01-13 → 2028-01-18 (+5d) | -88.2d → -92.45d |
| CON-LEG101-LR-5560 | Installation of Decoder cables 12 AWG between valves and controllers [Local – 04 ] | 2028-01-13 → 2028-01-18 (+5d) | 2028-01-16 → 2028-01-20 (+4d) | -88.2d → -92.45d |
| 14 | **Curbs and edging** | 2028-01-16 → 2028-01-20 (+4d) | 2028-01-19 → 2028-01-24 (+5d) |  |
| CON-LEG101-LR-4840 | Installation of Curbs and edging [Local – 04 ] | 2028-01-16 → 2028-01-20 (+4d) | 2028-01-19 → 2028-01-24 (+5d) | -88.2d → -92.45d |
| 13 | **Landscape** | 2028-01-19 → 2028-01-24 (+5d) | 2028-01-30 → 2028-02-03 (+4d) |  |
| CON-LEG101-LR-4620 | Site preparation for Planting Area [Local – 04 ] | 2028-01-19 → 2028-01-24 (+5d) | 2028-01-23 → 2028-01-27 (+4d) | -88.2d → -92.45d |
| CON-LEG101-LR-4690 | Placing Agricutural Soil [Local – 04 ] | 2028-01-23 → 2028-01-27 (+4d) | 2028-01-26 → 2028-01-31 (+5d) | -88.2d → -92.45d |
| CON-LEG101-LR-4760 | Planting Shrubs And Ground Cover [Local – 04 ] | 2028-01-26 → 2028-01-31 (+5d) | 2028-01-30 → 2028-02-03 (+4d) | -88.2d → -92.45d |
| 6 | **Local – 06** | 2027-11-27 → 2027-12-01 (+4d) | 2028-01-31 → 2028-02-05 (+5d) |  |
| 2 | **Irrigation Works** | 2027-11-27 → 2027-12-01 (+4d) | 2028-01-13 → 2028-01-18 (+5d) |  |
| 1 | **Secondary Irrigation** | 2027-11-27 → 2027-12-01 (+4d) | 2028-01-13 → 2028-01-18 (+5d) |  |
| 1 | **Pipe Work** | 2027-11-27 → 2027-12-01 (+4d) | 2027-12-16 → 2027-12-21 (+5d) |  |
| CON-LEG101-LR-4920 | Excavation for Secondary Irrigation [Local – 06 ] | 2027-11-27 → 2027-12-01 (+4d) | 2027-11-30 → 2027-12-05 (+5d) | -89.2d → -93.45d |
| CON-LEG101-LR-5060 | Installation of Pipe for Secondary Irrigation [Local – 06 ] | 2027-11-30 → 2027-12-05 (+5d) | 2027-12-04 → 2027-12-08 (+4d) | -89.2d → -93.45d |
| CON-LEG101-LR-5260 | Backfilling to Subgrade Elevation [Local – 06 ] | 2027-12-04 → 2027-12-08 (+4d) | 2027-12-07 → 2027-12-12 (+5d) | -89.2d → -93.45d |
| CON-LEG101-LR-5460 | Installation of tubing for risers connections from laterals [Local – 06 ] | 2027-12-07 → 2027-12-12 (+5d) | 2027-12-16 → 2027-12-21 (+5d) | -89.2d → -93.45d |
| 2 | **Valves and Controller** | 2027-12-16 → 2027-12-21 (+5d) | 2028-01-13 → 2028-01-18 (+5d) |  |
| CON-LEG101-LR-5300 | Installation of Electrical Solenoid Valve [Local – 06 ] | 2027-12-16 → 2027-12-21 (+5d) | 2027-12-21 → 2027-12-26 (+5d) | -89.2d → -93.45d |
| CON-LEG101-LR-5340 | Installation of quick coupler valve [Local – 06 ] | 2027-12-21 → 2027-12-26 (+5d) | 2027-12-26 → 2027-12-30 (+4d) | -89.2d → -93.45d |
| CON-LEG101-LR-5400 | Installation of a Flush valve [Local – 06 ] | 2027-12-26 → 2027-12-30 (+4d) | 2028-01-01 → 2028-01-05 (+4d) | -89.2d → -93.45d |
| CON-LEG101-LR-5510 | Install single station decoder for valve connection [Local – 06 ] | 2028-01-01 → 2028-01-05 (+4d) | 2028-01-06 → 2028-01-11 (+5d) | -89.2d → -93.45d |
| CON-LEG101-LR-5570 | Installation of Decoder cables 12 AWG between valves and controllers [Local – 06 ] | 2028-01-06 → 2028-01-11 (+5d) | 2028-01-13 → 2028-01-18 (+5d) | -89.2d → -93.45d |
| 14 | **Curbs and edging** | 2028-01-13 → 2028-01-18 (+5d) | 2028-01-17 → 2028-01-22 (+5d) |  |
| CON-LEG101-LR-4850 | Installation of Curbs and edging [Local – 06 ] | 2028-01-13 → 2028-01-18 (+5d) | 2028-01-17 → 2028-01-22 (+5d) | -89.2d → -93.45d |
| 13 | **Landscape** | 2028-01-17 → 2028-01-22 (+5d) | 2028-01-31 → 2028-02-05 (+5d) |  |
| CON-LEG101-LR-4630 | Site preparation for Planting Area [Local – 06 ] | 2028-01-17 → 2028-01-22 (+5d) | 2028-01-22 → 2028-01-26 (+4d) | -89.2d → -93.45d |
| CON-LEG101-LR-4700 | Placing Agricutural Soil [Local – 06 ] | 2028-01-22 → 2028-01-26 (+4d) | 2028-01-26 → 2028-01-31 (+5d) | -89.2d → -93.45d |
| CON-LEG101-LR-4770 | Planting Shrubs And Ground Cover [Local – 06 ] | 2028-01-26 → 2028-01-31 (+5d) | 2028-01-31 → 2028-02-05 (+5d) | -89.2d → -93.45d |
| 1 | **Roundabout - 01 (L01 & L04)** | 2027-09-29 → 2027-10-06 (+7d) | 2028-03-25 → 2028-04-01 (+7d) |  |
| 1 | **Irrigation Works** | 2027-09-29 → 2027-10-06 (+7d) | 2028-01-18 → 2028-01-25 (+7d) |  |
| 1 | **Secondary Irrigation** | 2027-09-29 → 2027-10-06 (+7d) | 2028-01-18 → 2028-01-25 (+7d) |  |
| 1 | **Pipe Work** | 2027-09-29 → 2027-10-06 (+7d) | 2028-01-18 → 2028-01-25 (+7d) |  |
| CON-LEG101-RA-1120 | Excavation for Secondary Irrigation [Roundabout : 01 ] | 2027-09-29 → 2027-10-06 (+7d) | 2027-10-11 → 2027-10-18 (+7d) | -145d → -151d |
| CON-LEG101-RA-1150 | Sand bedding for Secondary Irrigation [Roundabout : 01 ] | 2027-10-12 → 2027-10-19 (+7d) | 2027-10-24 → 2027-10-31 (+7d) | -145d → -151d |
| CON-LEG101-RA-1180 | Installation of Pipe for Secondary Irrigation [Roundabout : 01 ] | 2027-10-25 → 2027-11-01 (+7d) | 2027-11-06 → 2027-11-13 (+7d) | -145d → -151d |
| CON-LEG101-RA-1210 | Sand Surround for Secondary Irrigation [Roundabout : 01 ] | 2027-11-07 → 2027-11-14 (+7d) | 2027-11-22 → 2027-11-29 (+7d) | -136d → -142d |
| CON-LEG101-RA-1240 | Installation of Micron Marker Magnetic Tape [Roundabout : 01 ] | 2027-11-23 → 2027-11-30 (+7d) | 2027-12-08 → 2027-12-15 (+7d) | -136d → -142d |
| CON-LEG101-RA-1270 | Backfilling to Subgrade Elevation [Roundabout : 01 ] | 2027-12-09 → 2027-12-16 (+7d) | 2027-12-25 → 2028-01-01 (+7d) | -136d → -142d |
| CON-LEG101-RA-1390 | Installation of tubing for risers connections from laterals [Roundabout : 01 ] | 2027-12-26 → 2028-01-02 (+7d) | 2028-01-18 → 2028-01-25 (+7d) | -136d → -142d |
| 2 | **Valves and Controller** | 2027-11-07 → 2027-11-14 (+7d) | 2028-01-02 → 2028-01-09 (+7d) |  |
| CON-LEG101-RA-1300 | Installation of Electrical Solenoid Valve [Roundabout : 01 ] | 2027-11-07 → 2027-11-14 (+7d) | 2027-11-11 → 2027-11-18 (+7d) | -145d → -151d |
| CON-LEG101-RA-1330 | Installation of quick coupler valve [Roundabout : 01 ] | 2027-11-13 → 2027-11-20 (+7d) | 2027-11-17 → 2027-11-24 (+7d) | -145d → -151d |
| CON-LEG101-RA-1360 | Installation of a Flush valve [Roundabout : 01 ] | 2027-11-18 → 2027-11-25 (+7d) | 2027-11-30 → 2027-12-07 (+7d) | -145d → -151d |
| CON-LEG101-RA-1420 | Install single station decoder for valve connection [Roundabout : 01 ] | 2027-12-01 → 2027-12-08 (+7d) | 2027-12-16 → 2027-12-23 (+7d) | -134d → -140d |
| A | Catch | 2027-12-18 → 2027-12-25 (+7d) | 2028-01-02 → 2028-01-09 (+7d) | -134d → -140d |

| ID | Task | Start | Finish | Complete | Total float |
| --- | --- | --- | --- | --- | --- |
| 3 | **Curbs and edging** | 2028-01-03 → 2028-01-10 (+7d) | 2028-01-16 → 2028-01-23 (+7d) |  |  |
| CON-LEG101-RA-1090 | Installation of Curbs and edging [Roundabout : 01 ] | 2028-01-03 → 2028-01-10 (+7d) | 2028-01-16 → 2028-01-23 (+7d) |  | -134d → -140d |
| 2 | **Landscape** | 2028-01-19 → 2028-01-26 (+7d) | 2028-03-25 → 2028-04-01 (+7d) |  |  |
| CON-LEG101-RA-1000 | Site preparation for Planting Area [Roundabout : 01 ] | 2028-01-19 → 2028-01-26 (+7d) | 2028-02-09 → 2028-02-16 (+7d) |  | -136d → -142d |
| CON-LEG101-RA-1030 | Placing Agricutural Soil [Roundabout : 01 ] | 2028-02-10 → 2028-02-17 (+7d) | 2028-03-02 → 2028-03-09 (+7d) |  | -136d → -142d |
| CON-LEG101-RA-1060 | Planting Shrubs And Ground Cover [Roundabout : 01 ] | 2028-03-04 → 2028-03-11 (+7d) | 2028-03-25 → 2028-04-01 (+7d) |  | -136d → -142d |
| 4 | **Roundabout - 02 (L01 & L03)** | 2027-12-01 → 2027-12-08 (+7d) | 2028-04-04 → 2028-04-11 (+7d) |  |  |
| 1 | **Irrigation Works** | 2027-12-01 → 2027-12-08 (+7d) | 2028-03-21 → 2028-03-28 (+7d) |  |  |
| 1 | **Secondary Irrigation** | 2027-12-01 → 2027-12-08 (+7d) | 2028-03-21 → 2028-03-28 (+7d) |  |  |
| 1 | **Pipe Work** | 2027-12-01 → 2027-12-08 (+7d) | 2028-03-21 → 2028-03-28 (+7d) |  |  |
| CON-LEG101-RA-1130 | Excavation for Secondary Irrigation [Roundabout : 02 ] | 2027-12-01 → 2027-12-08 (+7d) | 2027-12-13 → 2027-12-20 (+7d) |  | -145d → -151d |
| CON-LEG101-RA-1160 | Sand bedding for Secondary Irrigation [Roundabout : 02 ] | 2027-12-14 → 2027-12-21 (+7d) | 2027-12-26 → 2028-01-02 (+7d) |  | -145d → -151d |
| CON-LEG101-RA-1190 | Installation of Pipe for Secondary Irrigation [Roundabout : 02 ] | 2027-12-27 → 2028-01-03 (+7d) | 2028-01-08 → 2028-01-15 (+7d) |  | -145d → -151d |
| CON-LEG101-RA-1220 | Sand Surround for Secondary Irrigation [Roundabout : 02 ] | 2028-01-09 → 2028-01-16 (+7d) | 2028-01-24 → 2028-01-31 (+7d) |  | -133d → -139d |
| CON-LEG101-RA-1250 | Installation of Micron Marker Magnetic Tape [Roundabout : 02 ] | 2028-01-25 → 2028-02-01 (+7d) | 2028-02-09 → 2028-02-16 (+7d) |  | -133d → -139d |
| CON-LEG101-RA-1280 | Backfilling to Subgrade Elevation [Roundabout : 02 ] | 2028-02-10 → 2028-02-17 (+7d) | 2028-02-26 → 2028-03-04 (+7d) |  | -133d → -139d |
| CON-LEG101-RA-1400 | Installation of tubing for risers connections from laterals [Roundabout : 02 ] | 2028-02-27 → 2028-03-05 (+7d) | 2028-03-21 → 2028-03-28 (+7d) |  | -133d → -139d |
| 2 | **Valves and Controller** | 2028-01-09 → 2028-01-16 (+7d) | 2028-02-26 → 2028-03-04 (+7d) |  |  |
| CON-LEG101-RA-1310 | Installation of Electrical Solenoid Valve [Roundabout : 02 ] | 2028-01-09 → 2028-01-16 (+7d) | 2028-01-13 → 2028-01-20 (+7d) |  | -145d → -151d |
| CON-LEG101-RA-1340 | Installation of quick coupler valve [Roundabout : 02 ] | 2028-01-15 → 2028-01-22 (+7d) | 2028-01-19 → 2028-01-26 (+7d) |  | -145d → -151d |
| CON-LEG101-RA-1370 | Installation of a Flush valve [Roundabout : 02 ] | 2028-01-20 → 2028-01-27 (+7d) | 2028-02-01 → 2028-02-08 (+7d) |  | -145d → -151d |
| CON-LEG101-RA-1430 | Install single station decoder for valve connection [Roundabout : 02 ] | 2028-02-02 → 2028-02-09 (+7d) | 2028-02-09 → 2028-02-16 (+7d) |  | -145d → -151d |
| CON-LEG101-RA-1460 | Installation of Decoder cables 12 AWG between valves and controllers [Roundabout : 02 ] | 2028-02-10 → 2028-02-17 (+7d) | 2028-02-26 → 2028-03-04 (+7d) |  | -145d → -151d |
| 3 | **Curbs and edging** | 2028-02-27 → 2028-03-05 (+7d) | 2028-02-29 → 2028-03-07 (+7d) |  |  |
| CON-LEG101-RA-1100 | Installation of Curbs and edging [Roundabout : 02 ] | 2028-02-27 → 2028-03-05 (+7d) | 2028-02-29 → 2028-03-07 (+7d) |  | -145d → -151d |
| 2 | **Landscape** | 2028-03-01 → 2028-03-08 (+7d) | 2028-04-04 → 2028-04-11 (+7d) |  |  |
| CON-LEG101-RA-1010 | Site preparation for Planting Area [Roundabout : 02 ] | 2028-03-01 → 2028-03-08 (+7d) | 2028-03-12 → 2028-03-19 (+7d) |  | -145d → -151d |
| CON-LEG101-RA-1040 | Placing Agricutural Soil [Roundabout : 02 ] | 2028-03-13 → 2028-03-20 (+7d) | 2028-03-23 → 2028-03-30 (+7d) |  | -145d → -151d |
| CON-LEG101-RA-1070 | Planting Shrubs And Ground Cover [Roundabout : 02 ] | 2028-03-25 → 2028-04-01 (+7d) | 2028-04-04 → 2028-04-11 (+7d) |  | -145d → -151d |
| 2 | **Roundabout - 03 (L03 & L05)** | 2027-12-14 → 2027-12-21 (+7d) | 2028-04-04 → 2028-04-11 (+7d) |  |  |
| 1 | **Irrigation Works** | 2027-12-14 → 2027-12-21 (+7d) | 2028-03-20 → 2028-03-27 (+7d) |  |  |
| 1 | **Secondary Irrigation** | 2027-12-14 → 2027-12-21 (+7d) | 2028-03-20 → 2028-03-27 (+7d) |  |  |
| 1 | **Pipe Work** | 2027-12-14 → 2027-12-21 (+7d) | 2028-03-20 → 2028-03-27 (+7d) |  |  |
| CON-LEG101-RA-1140 | Excavation for Secondary Irrigation [Roundabout : 03 ] | 2027-12-14 → 2027-12-21 (+7d) | 2027-12-26 → 2028-01-02 (+7d) |  | -145d → -151d |
| CON-LEG101-RA-1170 | Sand bedding for Secondary Irrigation [Roundabout : 03 ] | 2027-12-27 → 2028-01-03 (+7d) | 2028-01-06 → 2028-01-13 (+7d) |  | -145d → -151d |
| CON-LEG101-RA-1200 | Installation of Pipe for Secondary Irrigation [Roundabout : 03 ] | 2028-01-08 → 2028-01-15 (+7d) | 2028-01-19 → 2028-01-26 (+7d) |  | -145d → -151d |
| CON-LEG101-RA-1230 | Sand Surround for Secondary Irrigation [Roundabout : 03 ] | 2028-01-20 → 2028-01-27 (+7d) | 2028-02-01 → 2028-02-08 (+7d) |  | -132d → -138d |
| CON-LEG101-RA-1260 | Installation of Micron Marker Magnetic Tape [Roundabout : 03 ] | 2028-02-02 → 2028-02-09 (+7d) | 2028-02-14 → 2028-02-21 (+7d) |  | -132d → -138d |
| CON-LEG101-RA-1290 | Backfilling to Subgrade Elevation [Roundabout : 03 ] | 2028-02-15 → 2028-02-22 (+7d) | 2028-02-27 → 2028-03-05 (+7d) |  | -132d → -138d |
| CON-LEG101-RA-1410 | Installation of tubing for risers connections from laterals [Roundabout : 03 ] | 2028-02-28 → 2028-03-06 (+7d) | 2028-03-20 → 2028-03-27 (+7d) |  | -132d → -138d |
| 2 | **Valves and Controller** | 2028-01-20 → 2028-01-27 (+7d) | 2028-03-08 → 2028-03-15 (+7d) |  |  |
| CON-LEG101-RA-1320 | Installation of Electrical Solenoid Valve [Roundabout : 03 ] | 2028-01-20 → 2028-01-27 (+7d) | 2028-01-25 → 2028-02-01 (+7d) |  | -145d → -151d |
| CON-LEG101-RA-1350 | Installation of quick coupler valve [Roundabout : 03 ] | 2028-01-26 → 2028-02-02 (+7d) | 2028-01-31 → 2028-02-07 (+7d) |  | -145d → -151d |
| CON-LEG101-RA-1380 | Installation of a Flush valve [Roundabout : 03 ] | 2028-02-01 → 2028-02-08 (+7d) | 2028-02-13 → 2028-02-20 (+7d) |  | -145d → -151d |
| CON-LEG101-RA-1440 | Install single station decoder for valve connection [Roundabout : 03 ] | 2028-02-14 → 2028-02-21 (+7d) | 2028-02-21 → 2028-02-28 (+7d) |  | -145d → -151d |
| CON-LEG101-RA-1470 | Installation of Decoder cables 12 AWG between valves and controllers [Roundabout : 03 ] | 2028-02-22 → 2028-02-29 (+7d) | 2028-03-08 → 2028-03-15 (+7d) |  | -145d → -151d |
| 3 | **Curbs and edging** | 2028-03-09 → 2028-03-16 (+7d) | 2028-03-12 → 2028-03-19 (+7d) |  |  |
| CON-LEG101-RA-1110 | Installation of Curbs and edging [Roundabout : 03 ] | 2028-03-09 → 2028-03-16 (+7d) | 2028-03-12 → 2028-03-19 (+7d) |  | -145d → -151d |
| 2 | **Landscape** | 2028-03-13 → 2028-03-20 (+7d) | 2028-04-04 → 2028-04-11 (+7d) |  |  |
| CON-LEG101-RA-1020 | Site preparation for Planting Area [Roundabout : 03 ] | 2028-03-13 → 2028-03-20 (+7d) | 2028-03-20 → 2028-03-27 (+7d) |  | -145d → -151d |
| CON-LEG101-RA-1050 | Placing Agricutural Soil [Roundabout : 03 ] | 2028-03-21 → 2028-03-28 (+7d) | 2028-03-27 → 2028-04-03 (+7d) |  | -145d → -151d |
| CON-LEG101-RA-1080 | Planting Shrubs And Ground Cover [Roundabout : 03 ] | 2028-03-28 → 2028-04-04 (+7d) | 2028-04-04 → 2028-04-11 (+7d) |  | -145d → -151d |
| 6 | **Testing & Commissioning** |  | 2028-04-12 → 2028-04-19 (+7d) |  |  |
| CON-LEG101-TC-1020 | Test for Public Water Utility Distribution |  | 2027-11-29 → 2027-12-06 (+7d) |  | -71d → -77d |
| CON-LEG101-TC-1030 | Test for TSE Network |  | 2027-12-13 → 2027-12-20 (+7d) |  | -62.4d → -68.4d |
| CON-LEG101-TC-1040 | Test for Sanitary Sewerage |  | 2027-11-30 → 2027-12-07 (+7d) |  | -67.4d → -73.4d |
| CON-LEG101-TC-1050 | Test for Stormwater Utilities |  | 2027-12-02 → 2027-12-09 (+7d) |  | -67.4d → -73.4d |
| CON-LEG101-TC-1060 | Test for Bridge Work |  | 2027-12-06 → 2027-12-13 (+7d) |  | -62.4d → -68.4d |
| CON-LEG101-TC-1080 | Test for Fence & Gate |  | 2027-11-23 → 2027-11-30 (+7d) |  | -24.2d → -30.2d |
| CON-LEG101-TC-1000 | Test for Telecommunications Work |  | 2027-12-22 → 2027-12-29 (+7d) |  | -58.8d → -64.2d |
| CON-LEG101-TC-1010 | Test for Electrical Network |  | 2027-12-11 → 2027-12-18 (+7d) |  | -62.4d → -68.4d |
| CON-LEG101-TC-1070 | Test for CCTV feeding system and GSM |  | 2027-12-27 → 2028-01-02 (+6d) | 35% → 40% | -56.9d → -62d |
| CON-LEG101-TC-1100 | Test for Road Lighting |  | 2027-12-18 → 2027-12-23 (+5d) | 30% → 40% | -58.8d → -64.2d |
| CON-LEG101-TC-1110 | Test for Road Works |  | 2027-11-28 → 2027-12-05 (+7d) |  | -79.4d → -85.4d |
| CON-LEG101-TC-1120 | Test for Earthing System |  | 2028-01-01 → 2028-01-06 (+5d) |  | -56.9d → -62d |
| CON-LEG101-TC-1090 | Test for Irrigation and Landscape | 2028-04-05 → 2028-04-12 (+7d) | 2028-04-12 → 2028-04-19 (+7d) |  | -145d → -151d |
| 7 | **Project Close-out** | 2027-11-23 → 2027-11-30 (+7d) | 2028-05-06 → 2028-05-13 (+7d) |  |  |
| 1 | **As-Built DWGs** | 2027-11-23 → 2027-11-30 (+7d) | 2028-04-24 → 2028-05-01 (+7d) |  |  |
| 1 | **As-Built DWGs Submittal** | 2027-11-23 → 2027-11-30 (+7d) | 2028-04-18 → 2028-04-25 (+7d) |  |  |
| CON-LEG101-ABS-1080 | As-Built DWGs Submittal for Fence & Gate | 2027-11-23 → 2027-11-30 (+7d) | 2027-11-30 → 2027-12-07 (+7d) |  | -24.2d → -30.2d |

| ID | Task | Start | Finish | Total float |
| --- | --- | --- | --- | --- |
| CON-LEG101-ABS-1110 | As-Built DWGs Submittal for Road Works | 2027-11-28 → 2027-12-05 (+7d) | 2027-12-12 → 2027-12-19 (+7d) | -79.4d → -85.4d |
| CON-LEG101-ABS-1020 | As-Built DWGs Submittal for Public Water Utility Distribution | 2027-11-30 → 2027-12-07 (+7d) | 2027-12-13 → 2027-12-20 (+7d) | -71d → -77d |
| CON-LEG101-ABS-1050 | As-Built DWGs Submittal for Stormwater Utilities | 2027-12-02 → 2027-12-09 (+7d) | 2027-12-16 → 2027-12-23 (+7d) | -67.4d → -73.4d |
| CON-LEG101-ABS-1060 | As-Built DWGs Submittal for Bridge Work | 2027-12-06 → 2027-12-13 (+7d) | 2027-12-20 → 2027-12-27 (+7d) | -56.2d → -62.2d |
| CON-LEG101-ABS-1030 | As-Built DWGs Submittal for TSE Network | 2027-12-13 → 2027-12-20 (+7d) | 2027-12-27 → 2028-01-03 (+7d) | -62.4d → -68.4d |
| CON-LEG101-ABS-1040 | As-Built DWGs Submittal for Sanitary Sewerage | 2027-12-16 → 2027-12-23 (+7d) | 2027-12-30 → 2028-01-06 (+7d) | -67.4d → -73.4d |
| CON-LEG101-ABS-1100 | As-Built DWGs Submittal for Road Lighting | 2027-12-18 → 2027-12-25 (+7d) | 2028-01-01 → 2028-01-06 (+5d) | -56.6d → -62d |
| CON-LEG101-ABS-1000 | As-Built DWGs Submittal for Telecommunications Work | 2027-12-22 → 2027-12-29 (+7d) | 2028-01-05 → 2028-01-12 (+7d) | -58.8d → -64.2d |
| CON-LEG101-ABS-1070 | As-Built DWGs Submittal for CCTV feeding system and GSM | 2027-12-27 → 2028-01-02 (+6d) | 2028-01-05 → 2028-01-11 (+6d) | -55.7d → -60.8d |
| CON-LEG101-ABS-1010 | As-Built DWGs Submittal for Electrical Network | 2027-12-30 → 2028-01-06 (+7d) | 2028-01-13 → 2028-01-20 (+7d) | -67.4d → -73.4d |
| CON-LEG101-ABS-1120 | As-Built DWGs Submittal for Earthing System | 2028-01-01 → 2028-01-08 (+7d) | 2028-01-06 → 2028-01-12 (+6d) | -56.9d → -62d |
| CON-LEG101-ABS-1090 | As-Built DWGs Submittal for Irrigation and Landscape | 2028-04-13 → 2028-04-20 (+7d) | 2028-04-18 → 2028-04-25 (+7d) | -145d → -151d |
| 2 | **As-Built DWGs Approval** | 2027-11-30 → 2027-12-07 (+7d) | 2028-04-24 → 2028-05-01 (+7d) |  |
| CON-LEG101-ABA-1080 | As- Built DWGs Approval for Fence & Gate | 2027-11-30 → 2027-12-07 (+7d) | 2027-12-06 → 2027-12-13 (+7d) | -24.2d → -30.2d |
| CON-LEG101-ABA-1110 | As- Built DWGs Approval for Road Works | 2027-12-12 → 2027-12-19 (+7d) | 2027-12-23 → 2027-12-30 (+7d) | -79.4d → -85.4d |
| CON-LEG101-ABA-1020 | As- Built DWGs Approval for Public Water Utility Distribution | 2027-12-23 → 2027-12-30 (+7d) | 2028-01-04 → 2028-01-11 (+7d) | -79.4d → -85.4d |
| CON-LEG101-ABA-1030 | As- Built DWGs Approval for TSE Network | 2027-12-27 → 2028-01-03 (+7d) | 2028-01-08 → 2028-01-15 (+7d) | -62.4d → -68.4d |
| CON-LEG101-ABA-1100 | As- Built DWGs Approval for Road Lighting | 2028-01-01 → 2028-01-08 (+7d) | 2028-01-12 → 2028-01-18 (+6d) | -56.6d → -62d |
| CON-LEG101-ABA-1050 | As- Built DWGs Approval for Stormwater Utilities | 2028-01-04 → 2028-01-11 (+7d) | 2028-01-16 → 2028-01-23 (+7d) | -79.4d → -85.4d |
| CON-LEG101-ABA-1070 | As- Built DWGs Approval for CCTV feeding system and GSM | 2028-01-05 → 2028-01-11 (+6d) | 2028-01-11 → 2028-01-17 (+6d) | -55.7d → -60.8d |
| CON-LEG101-ABA-1000 | As- Built DWGs Approval for Telecommunications Work | 2028-01-05 → 2028-01-12 (+7d) | 2028-01-15 → 2028-01-22 (+7d) | -58.8d → -64.2d |
| CON-LEG101-ABA-1120 | As- Built DWGs Approval for Earthing System | 2028-01-06 → 2028-01-13 (+7d) | 2028-01-12 → 2028-01-18 (+6d) | -56.9d → -62d |
| CON-LEG101-ABA-1060 | As- Built DWGs Approval for Bridge Work | 2028-01-16 → 2028-01-23 (+7d) | 2028-01-27 → 2028-02-03 (+7d) | -79.4d → -85.4d |
| CON-LEG101-ABA-1010 | As- Built DWGs Approval for Electrical Network | 2028-01-27 → 2028-02-03 (+7d) | 2028-02-08 → 2028-02-15 (+7d) | -79.4d → -85.4d |
| CON-LEG101-ABA-1040 | As- Built DWGs Approval for Sanitary Sewerage | 2028-01-27 → 2028-02-03 (+7d) | 2028-02-08 → 2028-02-15 (+7d) | -79.4d → -85.4d |
| CON-LEG101-ABA-1090 | As- Built DWGs Approval for Irrigation and Landscape | 2028-04-19 → 2028-04-26 (+7d) | 2028-04-24 → 2028-05-01 (+7d) | -145d → -151d |
| 2 | **Demobilization** | 2028-04-25 → 2028-05-02 (+7d) | 2028-05-06 → 2028-05-13 (+7d) |  |
| CON-LEG101-DM-1000 | Demobilization of Manpower | 2028-04-25 → 2028-05-02 (+7d) | 2028-04-30 → 2028-05-07 (+7d) | -145d → -151d |
| CON-LEG101-DM-1010 | Removal of Equipment from Site | 2028-04-25 → 2028-05-02 (+7d) | 2028-04-30 → 2028-05-07 (+7d) | -145d → -151d |
| CON-LEG101-DM-1020 | Site Clean Up | 2028-04-25 → 2028-05-02 (+7d) | 2028-04-30 → 2028-05-07 (+7d) | -145d → -151d |
| CON-LEG101-DM-1030 | Removal of Site Offices and Structures | 2028-04-25 → 2028-05-02 (+7d) | 2028-04-30 → 2028-05-07 (+7d) | -145d → -151d |
| CON-LEG101-DM-1040 | Restoration of Ground Surfaces | 2028-05-01 → 2028-05-08 (+7d) | 2028-05-06 → 2028-05-13 (+7d) | -145d → -151d |

## Version 4 (data date 2026-10-20, saved 2026-10-19, file 02. JDH1-02-003 -ENJ-WPR-048-20-10-2026 Update Schedule.xer)

Last finish 2028-05-13 → 2028-05-20 (+7d). Complete tasks 1250 → 1278.

Changed:

| ID | Task | Start | Finish | Complete | Total float |
| --- | --- | --- | --- | --- | --- |
| 5 | **Milestones** |  | 2028-05-13 → 2028-05-20 (+7d) |  |  |
| 1 | **Key Milestones** |  | 2028-05-13 → 2028-05-20 (+7d) |  |  |
| CON-LEG101-MS-1000 | Project Completion Date | 2028-05-13 → 2028-05-20 (+7d) | 2028-05-13 → 2028-05-20 (+7d) |  | -151d → -157d |
| 2 | **Contractual Milestone** |  | 2028-05-13 → 2028-05-20 (+7d) |  |  |
| 4 | **Engineering** | 2026-10-31 → 2026-11-07 (+7d) | 2026-10-31 → 2026-11-07 (+7d) |  |  |
| CON-LEG101-MS-1060 | Finish Submission and Approval for Shop Drawings, Method of Statement, Prequalification and Materials | 2026-10-31 → 2026-11-07 (+7d) | 2026-10-31 → 2026-11-07 (+7d) |  | -49d → -55d |
| 1 | **Procurement** | 2026-10-25 → 2026-11-01 (+7d) | 2026-10-25 → 2026-11-01 (+7d) |  |  |
| CON-LEG101-MS-1100 | Finish PO for Short Lead Item & Long Lead Item | 2026-10-25 → 2026-11-01 (+7d) | 2026-10-25 → 2026-11-01 (+7d) |  | -43.2d → -49.2d |
| 5 | **Construction** | 2027-01-11 → 2027-01-18 (+7d) | 2028-05-13 → 2028-05-20 (+7d) |  |  |
| CON-LEG101-MS-1130 | Completion of Deep infrastructure network | 2027-01-11 → 2027-01-18 (+7d) | 2027-01-11 → 2027-01-18 (+7d) |  | 48.85d → 42.85d |
| CON-LEG101-MS-1120 | Completion of Roads & Meduim Voltage | 2027-06-12 → 2027-06-19 (+7d) | 2027-06-12 → 2027-06-19 (+7d) |  | -109.15d → -106.45d |
| CON-LEG101-MS-1140 | Completion of Shallow infrastructure network | 2027-09-26 → 2027-10-03 (+7d) | 2027-09-26 → 2027-10-03 (+7d) |  | -36d → -42d |
| CON-LEG101-MS-1150 | Completion all Works | 2028-05-13 → 2028-05-20 (+7d) | 2028-05-13 → 2028-05-20 (+7d) |  | -151d → -157d |
| 6 | **Monitoring and Control Milestone** | 2027-06-13 → 2027-06-20 (+7d) | 2028-04-11 → 2028-04-18 (+7d) |  |  |
| CON-LEG101-MS-1050 | Completion of Outside Boundary Area's Scope (Tie-in Lines) | 2027-06-13 → 2027-06-20 (+7d) | 2027-06-13 → 2027-06-20 (+7d) |  | 29.18d → 23.18d |
| CON-LEG101-MS-1020 | Completion of Bridge | 2027-08-22 → 2027-08-25 (+3d) | 2027-08-22 → 2027-08-25 (+3d) |  | -61.2d → -64.2d |
| CON-LEG101-MS-1040 | Completion of Fence and Gate | 2027-11-27 → 2027-11-30 (+3d) | 2027-11-27 → 2027-11-30 (+3d) |  | -30.2d → -33.2d |
| CON-LEG101-MS-1010 | Completion of Roads Finishing | 2027-12-01 → 2027-12-08 (+7d) | 2027-12-01 → 2027-12-08 (+7d) |  | -85.4d → -91.4d |
| CON-LEG101-MS-1030 | Completion of Roundabout & Landscape works | 2028-04-11 → 2028-04-18 (+7d) | 2028-04-11 → 2028-04-18 (+7d) |  | -151d → -157d |
| 3 | **Engineering** |  | 2026-10-31 → 2026-11-07 (+7d) |  |  |
| 2 | **Shop Drawings** |  | 2026-10-31 → 2026-11-07 (+7d) |  |  |
| 1 | **Shop Drawings Submittal** |  | 2026-10-24 → 2026-10-31 (+7d) |  |  |
| 2 | **Shop Drawings Submittal for Electrical Network** |  | 2026-10-24 → 2026-10-31 (+7d) |  |  |
| CON-LEG101-EN-1390 | Shop DWG Submittal for Medium Voltage Network | 2026-10-14 → 2026-10-21 (+7d) | 2026-10-24 → 2026-10-31 (+7d) |  | -49d → -55d |
| 2 | **Shop Drawings Approval** |  | 2026-10-31 → 2026-11-07 (+7d) |  |  |
| 2 | **Shop Drawings Approval for Electrical Network** |  | 2026-10-31 → 2026-11-07 (+7d) |  |  |
| CON-LEG101-EN-1660 | Shop DWG Approval for Medium Voltage Network | 2026-10-25 → 2026-11-01 (+7d) | 2026-10-31 → 2026-11-07 (+7d) |  | -49d → -55d |
| 4 | **Pre-qualification and Material** |  | 2026-10-19 → 2026-10-26 (+7d) |  |  |
| 4 | **Electrical Network** |  | 2026-10-19 → 2026-10-26 (+7d) |  |  |
| 13 | **Ring Main Unit** |  | 2026-10-19 → 2026-10-26 (+7d) |  |  |
| CON-LEG101-SB-1710 | Pre-qualification and Material Approval for Ring Main Unit |  | 2026-10-19 → 2026-10-26 (+7d) |  | -43.2d → -49.2d |
| 14 | **Street Lighting Sub-station** |  | 2026-10-19 → 2026-10-26 (+7d) |  |  |
| CON-LEG101-SB-1750 | Pre-qualification and Material Approval for Street Lighting Sub-station |  | 2026-10-19 → 2026-10-26 (+7d) |  | -38.2d → -44.2d |
| 4 | **Procurement** |  | 2027-09-14 → 2027-08-21 (-24d) |  |  |
| 2 | **Short Lead Item** |  | 2027-08-14 → 2027-08-21 (+7d) |  |  |
| 1 | **Road Works - Civil** |  | 2027-08-14 → 2027-08-21 (+7d) |  |  |
| 9 | **Pavement Markings** |  | 2027-08-14 → 2027-08-21 (+7d) |  |  |
| CON-LEG101-PR-1600 | Material Delivery for Pavement Markings | 2027-07-22 → 2027-07-29 (+7d) | 2027-08-09 → 2027-08-16 (+7d) |  | -73.45d → -69.45d |
| CON-LEG101-PR-2070 | Staging Time for Pavement Markings | 2027-08-09 → 2027-08-16 (+7d) | 2027-08-14 → 2027-08-21 (+7d) |  | -73.45d → -69.45d |
| 6 | **Bituminous Base & Wearing Course** |  | 2027-08-04 → 2027-08-11 (+7d) |  |  |
| CON-LEG101-PR-1530 | Material Delivery for Wearing Course |  | 2027-08-04 → 2027-08-11 (+7d) |  | -73.45d → -69.45d |
| 1 | **Long Lead Item** |  | 2027-09-14 → 2027-06-12 (-94d) |  |  |
| 10 | **Fence & Gates** |  | 2027-01-16 → 2027-01-23 (+7d) |  |  |
| 2 | **Gates** |  | 2027-01-16 → 2027-01-23 (+7d) |  |  |
| CON-LEG101-PR-2040 | Material Fabrication for Gates |  | 2026-12-17 → 2026-12-24 (+7d) |  | -21.65d → -12.95d |
| CON-LEG101-PR-2050 | Material Delivery for Gates | 2026-12-19 → 2026-12-26 (+7d) | 2027-01-04 → 2027-01-11 (+7d) |  | -21.65d → -12.95d |
| CON-LEG101-PR-2090 | Staging Time for Gates | 2027-01-05 → 2027-01-12 (+7d) | 2027-01-16 → 2027-01-23 (+7d) |  | -21.65d → -12.95d |
| 1 | **Electrical Network** |  | 2027-06-05 → 2027-06-12 (+7d) |  |  |
| 12 | **Cable Termination & Joints** |  | 2027-03-16 → 2027-03-23 (+7d) |  |  |
| CON-LEG101-PR-1240 | PO for Cable Termination & Joints |  | 2026-10-19 → 2026-10-26 (+7d) |  | -119d → -125d |
| CON-LEG101-PR-1270 | Material Fabrication for Cable Termination & Joints | 2026-10-20 → 2026-10-27 (+7d) | 2027-02-01 → 2027-02-08 (+7d) |  | -119d → -125d |
| CON-LEG101-PR-1300 | Material Delivery for Cable Termination & Joints | 2027-02-02 → 2027-02-14 (+12d) | 2027-02-24 → 2027-03-03 (+7d) |  | -119d → -125d |
| CON-LEG101-PR-1450 | Stagging Time for Cable Termination & Joints | 2027-03-06 → 2027-03-13 (+7d) | 2027-03-16 → 2027-03-23 (+7d) |  | -126d → -132d |
| 1 | **Medium Voltage Cable** |  | 2027-03-04 → 2027-03-11 (+7d) |  |  |
| CON-LEG101-PR-1000 | PO for Medium Voltage Cable |  | 2026-10-19 → 2026-10-26 (+7d) |  | -134d → -140d |
| CON-LEG101-PR-1080 | Material Fabrication for Medium Voltage Cable | 2026-11-09 → 2026-11-16 (+7d) | 2027-01-17 → 2027-01-24 (+7d) |  | -151d → -157d |
| CON-LEG101-PR-1160 | Material Delivery for Medium Voltage Cable | 2027-01-24 → 2027-01-31 (+7d) | 2027-02-14 → 2027-02-21 (+7d) |  | -151d → -157d |
| CON-LEG101-PR-1880 | Staging Time for Medium Voltage Cable | 2027-02-15 → 2027-02-23 (+8d) | 2027-03-04 → 2027-03-11 (+7d) |  | -151d → -157d |
| 4 | **Street Lighting Sub-station** |  | 2027-05-02 → 2027-05-09 (+7d) |  |  |
| CON-LEG101-PR-1090 | Material Fabrication for Street Lighting Sub-station | 2027-01-18 → 2027-01-25 (+7d) | 2027-04-03 → 2027-04-10 (+7d) |  | -107.65d → -98.95d |
| CON-LEG101-PR-1170 | Material Delivery for Street Lighting Sub-station | 2027-04-04 → 2027-04-11 (+7d) | 2027-04-20 → 2027-04-27 (+7d) |  | -107.65d → -98.95d |
| CON-LEG101-PR-1890 | Staging Time for Street Lighting Sub-station | 2027-04-21 → 2027-04-28 (+7d) | 2027-05-02 → 2027-05-09 (+7d) |  | -107.65d → -98.95d |
| 2 | **Ring Main Unit** | 2026-10-19 → 2026-10-26 (+7d) | 2027-06-05 → 2027-06-12 (+7d) |  |  |
| CON-LEG101-PR-2480 | PO for Ring Main Unit | 2026-10-19 → 2026-10-26 (+7d) | 2026-10-25 → 2026-11-01 (+7d) |  | -43.2d → -49.2d |
| CON-LEG101-PR-2490 | Material Fabrication for Ring Main Unit | 2027-01-06 → 2027-01-13 (+7d) | 2027-04-03 → 2027-04-10 (+7d) |  | -82.65d → -73.95d |
| CON-LEG101-PR-2500 | Material Delivery for Ring Main Unit | 2027-05-03 → 2027-05-10 (+7d) | 2027-05-24 → 2027-05-31 (+7d) |  | -107.65d → -98.95d |
| CON-LEG101-PR-2510 | Staging Time for Ring Main Unit | 2027-05-25 → 2027-06-01 (+7d) | 2027-06-05 → 2027-06-12 (+7d) |  | -107.65d → -98.95d |
| 6 | **Landscape Works** |  | 2027-09-14 → 2027-05-31 (-106d) |  |  |
| 4 | **Electrical Solenoid Valve** |  | 2027-01-28 → 2026-10-13 (-107d) |  |  |
| CON-LEG101-PR-2900 | Material Fabrication for Electrical Solenoid Valve |  | 2026-11-10 → 2026-10-05 A (-36d) | 60% → 100% | 56d → none |

| ID | Task | Start | Finish | Complete | Total float |
| --- | --- | --- | --- | --- | --- |
| CON-LEG101-PR-2960 | Material Delivery for Electrical Solenoid Valve | 2026-11-11 → 2026-10-06 A (-36d) | 2026-11-22 → 2026-10-10 A (-43d) | 0% → 100% | 56d → none |
| CON-LEG101-PR-3020 | Staging Time for Electrical Solenoid Valve | 2027-01-18 → 2026-10-11 A (-99d) | 2027-01-28 → 2026-10-13 A (-107d) | 0% → 100% | 8d → none |
| 5 | **Quick coupler valve** |  | 2027-02-18 → 2026-10-13 (-128d) |  |  |
| CON-LEG101-PR-2910 | Material Fabrication for Quick coupler valve |  | 2026-11-10 → 2026-10-05 A (-36d) | 60% → 100% | 76d → none |
| CON-LEG101-PR-2970 | Material Delivery for Quick coupler valve | 2027-01-30 → 2026-10-06 A (-116d) | 2027-02-06 → 2026-10-10 A (-119d) | 0% → 100% | 8d → none |
| CON-LEG101-PR-3030 | Staging Time for Quick coupler valve | 2027-02-07 → 2026-10-11 A (-119d) | 2027-02-18 → 2026-10-13 A (-128d) | 0% → 100% | 8d → none |
| 2 | **Flush valve** |  | 2027-03-15 → 2026-10-13 (-153d) |  |  |
| CON-LEG101-PR-3090 | Material Fabrication for Flush valve |  | 2026-11-10 → 2026-10-05 A (-36d) | 60% → 100% | 90d → none |
| CON-LEG101-PR-3100 | Material Delivery for Flush valve | 2027-02-20 → 2026-10-06 A (-137d) | 2027-03-03 → 2026-10-10 A (-144d) | 0% → 100% | 8d → none |
| CON-LEG101-PR-3110 | Staging Time for Flush valve | 2027-03-04 → 2026-10-11 A (-144d) | 2027-03-15 → 2026-10-13 A (-153d) | 0% → 100% | 8d → none |
| 6 | **Irrigation controller** |  | 2027-04-07 → 2026-10-13 (-176d) |  |  |
| CON-LEG101-PR-2920 | Material Fabrication for Irrigation controller |  | 2026-11-10 → 2026-10-05 A (-36d) | 60% → 100% | 100d → none |
| CON-LEG101-PR-2980 | Material Delivery for Irrigation controller | 2027-03-16 → 2026-10-06 A (-161d) | 2027-03-27 → 2026-10-10 A (-168d) | 0% → 100% | 8d → none |
| CON-LEG101-PR-3040 | Staging Time for Irrigation controller | 2027-03-28 → 2026-10-11 A (-168d) | 2027-04-07 → 2026-10-13 A (-176d) | 0% → 100% | 8d → none |
| 3 | **Decoder for valve** |  | 2027-05-04 → 2026-10-13 (-203d) |  |  |
| CON-LEG101-PR-3130 | Material Fabrication for Decoder for valve |  | 2026-11-10 → 2026-10-05 A (-36d) | 60% → 100% | 100d → none |
| CON-LEG101-PR-3140 | Material Delivery for Decoder for valve | 2027-04-08 → 2026-10-06 A (-184d) | 2027-04-22 → 2026-10-10 A (-194d) | 0% → 100% | 8d → none |
| CON-LEG101-PR-3150 | Staging Time for Decoder for valve | 2027-04-24 → 2026-10-11 A (-195d) | 2027-05-04 → 2026-10-13 A (-203d) | 0% → 100% | 8d → none |
| 7 | **Decoder Cables** |  | 2027-05-20 → 2026-10-13 (-219d) |  |  |
| CON-LEG101-PR-2930 | Material Fabrication for Decoder Cables |  | 2026-11-10 → 2026-10-05 A (-36d) | 60% → 100% | 100d → none |
| CON-LEG101-PR-2990 | Material Delivery for Decoder Cables | 2026-11-11 → 2026-10-06 A (-36d) | 2026-11-22 → 2026-10-10 A (-43d) | 0% → 100% | 100d → none |
| CON-LEG101-PR-3050 | Staging Time for Decoder Cables | 2027-05-05 → 2026-10-11 A (-206d) | 2027-05-20 → 2026-10-13 A (-219d) | 0% → 100% | 8d → none |
| 8 | **Shrubs And Ground Cover** |  | 2027-09-14 → 2027-05-31 (-106d) |  |  |
| CON-LEG101-PR-3000 | Material Delivery for agricultural soil | 2027-05-22 → 2027-01-25 (-117d) | 2027-09-02 → 2027-05-19 (-106d) |  | 8d → 99d |
| CON-LEG101-PR-3060 | Staging Time for agricultural soil | 2027-09-04 → 2027-05-20 (-107d) | 2027-09-14 → 2027-05-31 (-106d) |  | 8d → 99d |
| 4 | **Bridge Works** |  | 2027-04-29 → 2027-03-23 (-37d) |  |  |
| 1 | **Guard Rail** |  | 2027-03-27 → 2027-02-21 (-34d) |  |  |
| CON-LEG101-PR-2270 | Material Fabrication for Guard Rail |  | 2026-10-31 → 2026-10-15 A (-16d) | 80% → 100% | 102d → none |
| CON-LEG101-PR-2280 | Material Delivery for Guard Rail | 2026-11-01 → 2026-10-17 A (-15d) | 2026-11-17 → 2026-10-25 (-23d) | 0% → 75% | 102d → 122.25d |
| CON-LEG101-PR-2290 | Staging Time for Guard Rail | 2027-03-04 → 2027-01-25 (-38d) | 2027-03-27 → 2027-02-21 (-34d) |  | 16d → 44d |
| 5 | **Logo MODON** |  | 2027-04-29 → 2026-09-30 (-211d) |  |  |
| CON-LEG101-PR-2350 | Material Fabrication for Logo MODON |  | 2026-11-17 → 2026-09-24 A (-54d) | 80% → 100% | 113d → none |
| CON-LEG101-PR-2360 | Material Delivery for Logo MODON | 2027-03-28 → 2026-09-26 A (-183d) | 2027-04-18 → 2026-09-28 A (-202d) | 0% → 100% | 22d → none |
| CON-LEG101-PR-2430 | Staging Time for Logo MODON | 2027-04-19 → 2026-09-30 A (-201d) | 2027-04-29 → 2026-09-30 A (-211d) | 0% → 100% | 22d → none |
| 2 | **GRP Panel** |  | 2027-04-25 → 2027-03-23 (-33d) |  |  |
| CON-LEG101-PR-2310 | Material Fabrication for GRP Panel |  | 2026-11-28 → 2026-11-03 (-25d) | 60% → 80% | 113d → 134d |
| CON-LEG101-PR-2320 | Material Delivery for GRP Panel | 2027-03-28 → 2027-02-23 (-33d) | 2027-04-13 → 2027-03-11 (-33d) |  | 16d → 44d |
| CON-LEG101-PR-2330 | Staging Time for GRP Panel | 2027-04-14 → 2027-03-13 (-32d) | 2027-04-25 → 2027-03-23 (-33d) |  | 16d → 44d |
| 11 | **Irrigation Works** |  | 2027-08-25 → 2026-10-11 (-318d) |  |  |
| 1 | **Flush valve** |  | 2027-08-25 → 2026-10-11 (-318d) |  |  |
| CON-LEG101-PR-2680 | Material Fabrication for Flush valve |  | 2026-12-20 → 2026-10-05 A (-76d) | 60% → 100% | 100d → none |
| CON-LEG101-PR-2720 | Material Delivery for Flush valve | 2026-12-21 → 2026-10-06 A (-76d) | 2027-01-12 → 2026-10-08 A (-96d) | 0% → 100% | 100d → none |
| CON-LEG101-PR-2760 | Staging Time for Flush valve | 2027-08-14 → 2026-10-10 A (-308d) | 2027-08-25 → 2026-10-11 A (-318d) | 0% → 100% | -73.45d → none |
| 1 | **Construction** |  | 2028-04-11 → 2028-04-18 (+7d) |  |  |
| 1 | **Roads & Meduim Voltage** |  | 2027-06-12 → 2027-06-19 (+7d) |  |  |
| 1 | **Local – 01** |  | 2027-05-26 → 2027-06-02 (+7d) |  |  |
| 1 | **LOCAL - 01 Segment-01 (From 0+000 to 1+066)** |  | 2027-04-07 → 2027-04-14 (+7d) |  |  |
| 8 | **Electrical Works** |  | 2027-04-07 → 2027-04-14 (+7d) |  |  |
| CON-LEG101-LR-15000 | Approval of Subcontractor / Supplier / Consultant for Medium Voltage from SEC | 2026-10-14 → 2026-10-21 (+7d) | 2026-10-25 → 2026-11-01 (+7d) |  | -151d → -157d |
| CON-LEG101-LR-15010 | Approval Materials of Medium Voltage from SEC | 2026-10-26 → 2026-11-02 (+7d) | 2026-11-05 → 2026-11-12 (+7d) |  | -151d → -157d |
| CON-LEG101-LR-15030 | PO for Medium Voltage | 2026-11-07 → 2026-11-14 (+7d) | 2026-11-08 → 2026-11-15 (+7d) |  | -151d → -157d |
| CON-LEG101-LR-15020 | Testing Materials of Medium Voltage from SEC | 2027-01-18 → 2027-01-25 (+7d) | 2027-01-23 → 2027-01-30 (+7d) |  | -151d → -157d |
| 2 | **Medium Voltage** |  | 2027-04-07 → 2027-04-14 (+7d) |  |  |
| CON-LEG101-LR-6880 | Excavation for Medium Voltage trench [Local – 01 Segment-01] | 2027-03-06 → 2027-03-13 (+7d) | 2027-03-13 → 2027-03-20 (+7d) |  | -151d → -157d |
| CON-LEG101-LR-7060 | Installation of Medium Voltage Cables [Local – 01 Segment-01] | 2027-03-14 → 2027-03-21 (+7d) | 2027-03-21 → 2027-03-28 (+7d) |  | -95.15d → -92.45d |
| CON-LEG101-LR-7150 | Installation of Straight joints cables [Local – 01 Segment-01] | 2027-03-22 → 2027-03-29 (+7d) | 2027-03-23 → 2027-03-30 (+7d) |  | -95.15d → -92.45d |
| CON-LEG101-LR-7240 | Installation of Cable Termination for 13.8 kv 3Cx 500 mm², Al /XLPE/LLDPE [Local – 01 Segment-01] | 2027-03-24 → 2027-03-31 (+7d) | 2027-03-27 → 2027-04-03 (+7d) |  | -95.15d → -92.45d |
| CON-LEG101-LR-7330 | Installation of Medium Voltage Switchgears [Local – 01 Segment-01] | 2027-03-28 → 2027-04-04 (+7d) | 2027-04-04 → 2027-04-11 (+7d) |  | -95.15d → -92.45d |
| CON-LEG101-LR-7680 | Installation of Cable Termination [Local – 01 Segment-01] | 2027-04-05 → 2027-04-12 (+7d) | 2027-04-07 → 2027-04-14 (+7d) |  | -95.15d → -92.45d |
| 2 | **LOCAL - 01 Segment-02 (From 1+066 to 2+133)** |  | 2027-04-25 → 2027-05-02 (+7d) |  |  |
| 8 | **Electrical Works** |  | 2027-04-25 → 2027-05-02 (+7d) |  |  |
| 2 | **Medium Voltage** |  | 2027-04-25 → 2027-05-02 (+7d) |  |  |
| CON-LEG101-LR-6890 | Excavation for Medium Voltage trench [Local – 01 Segment-02] | 2027-03-14 → 2027-03-21 (+7d) | 2027-03-21 → 2027-03-28 (+7d) |  | -151d → -157d |
| CON-LEG101-LR-7070 | Installation of Medium Voltage Cables [Local – 01 Segment-02] | 2027-03-22 → 2027-03-29 (+7d) | 2027-03-29 → 2027-04-05 (+7d) |  | -92.15d → -89.45d |
| CON-LEG101-LR-7160 | Installation of Straight joints cables [Local – 01 Segment-02] | 2027-03-30 → 2027-04-06 (+7d) | 2027-04-04 → 2027-04-11 (+7d) |  | -92.15d → -89.45d |
| CON-LEG101-LR-7250 | Installation of Cable Termination for 13.8 kv 3Cx 500 mm², Al /XLPE/LLDPE [Local – 01 Segment-02] | 2027-04-08 → 2027-04-15 (+7d) | 2027-04-11 → 2027-04-18 (+7d) |  | -95.15d → -92.45d |
| CON-LEG101-LR-7340 | Installation of Medium Voltage Switchgears [Local – 01 Segment-02] | 2027-04-12 → 2027-04-19 (+7d) | 2027-04-19 → 2027-04-26 (+7d) |  | -95.15d → -92.45d |
| CON-LEG101-LR-7690 | Installation of Cable Termination [Local – 01 Segment-02] | 2027-04-20 → 2027-04-27 (+7d) | 2027-04-25 → 2027-05-02 (+7d) |  | -95.15d → -92.45d |
| 3 | **LOCAL - 01 Segment-03 (From 2+133 to 3+200)** |  | 2027-05-26 → 2027-06-02 (+7d) |  |  |
| 8 | **Electrical Works** |  | 2027-05-26 → 2027-06-02 (+7d) |  |  |

| ID | Task | Start | Finish | Total float |
| --- | --- | --- | --- | --- |
| 2 | **Medium Voltage** |  | 2027-05-26 → 2027-06-02 (+7d) |  |
| CON-LEG101-LR-6900 | Excavation for Medium Voltage trench [Local – 01 Segment-03] | 2027-04-26 → 2027-05-03 (+7d) | 2027-04-29 → 2027-05-06 (+7d) | -95.15d → -92.45d |
| CON-LEG101-LR-7080 | Installation of Medium Voltage Cables [Local – 01 Segment-03] | 2027-05-01 → 2027-05-08 (+7d) | 2027-05-08 → 2027-05-19 (+11d) | -95.15d → -92.45d |
| CON-LEG101-LR-7170 | Installation of Straight joints cables [Local – 01 Segment-03] | 2027-05-09 → 2027-05-20 (+11d) | 2027-05-10 → 2027-05-22 (+12d) | -95.15d → -92.45d |
| CON-LEG101-LR-7260 | Installation of Cable Termination for 13.8 kv 3Cx 500 mm², Al /XLPE/LLDPE [Local – 01 Segment-03] | 2027-05-11 → 2027-05-23 (+12d) | 2027-05-13 → 2027-05-25 (+12d) | -95.15d → -92.45d |
| CON-LEG101-LR-7350 | Installation of Medium Voltage Switchgears [Local – 01 Segment-03] | 2027-05-19 → 2027-05-26 (+7d) | 2027-05-23 → 2027-05-30 (+7d) | -95.15d → -92.45d |
| CON-LEG101-LR-7700 | Installation of Cable Termination [Local – 01 Segment-03] | 2027-05-24 → 2027-05-31 (+7d) | 2027-05-26 → 2027-06-02 (+7d) | -95.15d → -92.45d |
| 4 | **Local – 02** |  | 2027-05-10 → 2027-05-22 (+12d) |  |
| 8 | **Electrical Works** |  | 2027-05-10 → 2027-05-22 (+12d) |  |
| 2 | **Medium Voltage** |  | 2027-05-10 → 2027-05-22 (+12d) |  |
| CON-LEG101-LR-6910 | Excavation for Medium Voltage trench [Local – 02 ] | 2027-03-22 → 2027-03-29 (+7d) | 2027-03-30 → 2027-04-06 (+7d) | -151d → -157d |
| CON-LEG101-LR-7090 | Installation of Medium Voltage Cables [Local – 02 ] | 2027-03-31 → 2027-04-07 (+7d) | 2027-04-14 → 2027-04-21 (+7d) | -151d → -157d |
| CON-LEG101-LR-7180 | Installation of Straight joints cables [Local – 02 ] | 2027-04-15 → 2027-04-22 (+7d) | 2027-04-21 → 2027-04-28 (+7d) | -151d → -157d |
| CON-LEG101-LR-7270 | Installation of Cable Termination for 13.8 kv 3Cx 500 mm², Al /XLPE/LLDPE [Local – 02 ] | 2027-04-22 → 2027-04-29 (+7d) | 2027-05-01 → 2027-05-08 (+7d) | -151d → -157d |
| CON-LEG101-LR-7360 | Installation of Medium Voltage Switchgears [Local – 02 ] | 2027-05-02 → 2027-05-09 (+7d) | 2027-05-06 → 2027-05-13 (+7d) | -151d → -157d |
| CON-LEG101-LR-7710 | Installation of Cable Termination [Local – 02 ] | 2027-05-08 → 2027-05-19 (+11d) | 2027-05-10 → 2027-05-22 (+12d) | -151d → -157d |
| 2 | **Local – 03** |  | 2027-06-07 → 2027-06-14 (+7d) |  |
| 8 | **Electrical Works** |  | 2027-06-07 → 2027-06-14 (+7d) |  |
| 2 | **Medium Voltage** |  | 2027-06-07 → 2027-06-14 (+7d) |  |
| CON-LEG101-LR-6920 | Excavation for Medium Voltage trench [Local – 03 ] | 2027-05-11 → 2027-05-23 (+12d) | 2027-05-13 → 2027-05-25 (+12d) | -151d → -157d |
| CON-LEG101-LR-7100 | Installation of Medium Voltage Cables [Local – 03 ] | 2027-05-19 → 2027-05-26 (+7d) | 2027-05-24 → 2027-05-31 (+7d) | -105.15d → -102.45d |
| CON-LEG101-LR-7190 | Installation of Straight joints cables [Local – 03 ] | 2027-05-25 → 2027-06-01 (+7d) | 2027-05-26 → 2027-06-02 (+7d) | -105.15d → -102.45d |
| CON-LEG101-LR-7280 | Installation of Cable Termination for 13.8 kv 3Cx 500 mm², Al /XLPE/LLDPE [Local – 03 ] | 2027-05-27 → 2027-06-03 (+7d) | 2027-05-30 → 2027-06-06 (+7d) | -105.15d → -102.45d |
| CON-LEG101-LR-7370 | Installation of Medium Voltage Switchgears [Local – 03 ] | 2027-05-31 → 2027-06-07 (+7d) | 2027-06-03 → 2027-06-10 (+7d) | -105.15d → -102.45d |
| CON-LEG101-LR-7720 | Installation of Cable Termination [Local – 03 ] | 2027-06-05 → 2027-06-12 (+7d) | 2027-06-07 → 2027-06-14 (+7d) | -105.15d → -102.45d |
| 3 | **Local – 04** |  | 2027-06-12 → 2027-06-19 (+7d) |  |
| 7 | **Road Works** |  | 2027-01-10 → 2027-01-17 (+7d) |  |
| 1 | **Earthworks and Site Grading** |  | 2026-12-12 → 2026-12-19 (+7d) |  |
| CON-LEG101-LR-1800 | Excavation for Roadway [Local – 04 ] | 2026-11-01 → 2026-11-08 (+7d) | 2026-11-17 → 2026-11-24 (+7d) | -48.24d → -54.24d |
| CON-LEG101-LR-4420 | Embankments to the roads [Local – 04 ] | 2026-11-18 → 2026-11-25 (+7d) | 2026-12-12 → 2026-12-19 (+7d) | 13.85d → 16.55d |
| 2 | **Asphalt Work** | 2026-12-13 → 2026-12-20 (+7d) | 2027-01-10 → 2027-01-17 (+7d) |  |
| CON-LEG101-LR-5630 | Subgrade [Local – 04 ] | 2026-12-13 → 2026-12-20 (+7d) | 2026-12-26 → 2027-01-02 (+7d) | 13.85d → 16.55d |
| CON-LEG101-LR-5730 | Aggregate base course [Local – 04 ] | 2026-12-28 → 2027-01-04 (+7d) | 2027-01-05 → 2027-01-12 (+7d) | 12.85d → 15.55d |
| CON-LEG101-LR-5830 | Prime Coat (MC1) [Local – 04 ] | 2027-01-06 → 2027-01-13 (+7d) | 2027-01-07 → 2027-01-14 (+7d) | 12.85d → 15.55d |
| CON-LEG101-LR-5930 | Bituminous Base Course [Local – 04 ] | 2027-01-09 → 2027-01-16 (+7d) | 2027-01-10 → 2027-01-17 (+7d) | 12.85d → 15.55d |
| 1 | **Electric Works** | 2027-05-11 → 2027-05-23 (+12d) | 2027-06-12 → 2027-06-19 (+7d) |  |
| 2 | **Medium Voltage** | 2027-05-11 → 2027-05-23 (+12d) | 2027-06-12 → 2027-06-19 (+7d) |  |
| CON-LEG101-LR-6930 | Excavation for Medium Voltage trench [Local – 04 ] | 2027-05-11 → 2027-05-23 (+12d) | 2027-05-19 → 2027-05-26 (+7d) | -151d → -157d |
| CON-LEG101-LR-7020 | Installation of Medium Voltage Cables Duct Banks [Local – 04 ] | 2027-05-20 → 2027-05-27 (+7d) | 2027-05-23 → 2027-05-30 (+7d) | -109.15d → -106.45d |
| CON-LEG101-LR-7110 | Installation of Medium Voltage Cables [Local – 04 ] | 2027-05-24 → 2027-05-31 (+7d) | 2027-05-30 → 2027-06-06 (+7d) | -109.15d → -106.45d |
| CON-LEG101-LR-7200 | Installation of Straight joints cables [Local – 04 ] | 2027-05-31 → 2027-06-07 (+7d) | 2027-06-02 → 2027-06-09 (+7d) | -109.15d → -106.45d |
| CON-LEG101-LR-7290 | Installation of Cable Termination for 13.8 kv 3Cx 500 mm², Al /XLPE/LLDPE [Local – 04 ] | 2027-06-03 → 2027-06-10 (+7d) | 2027-06-06 → 2027-06-13 (+7d) | -109.15d → -106.45d |
| CON-LEG101-LR-7380 | Installation of Medium Voltage Switchgears [Local – 04 ] | 2027-06-07 → 2027-06-14 (+7d) | 2027-06-08 → 2027-06-15 (+7d) | -109.15d → -106.45d |
| CON-LEG101-LR-7730 | Installation of Cable Termination [Local – 04 ] | 2027-06-09 → 2027-06-16 (+7d) | 2027-06-12 → 2027-06-19 (+7d) | -109.15d → -106.45d |
| 5 | **Local – 05** |  | 2027-06-06 → 2027-06-13 (+7d) |  |
| 8 | **Electrical Works** |  | 2027-06-06 → 2027-06-13 (+7d) |  |
| 2 | **Medium Voltage** |  | 2027-06-06 → 2027-06-13 (+7d) |  |
| CON-LEG101-LR-6940 | Excavation for Medium Voltage trench [Local – 05 ] | 2027-05-20 → 2027-05-27 (+7d) | 2027-05-24 → 2027-05-31 (+7d) | -104.15d → -101.45d |
| CON-LEG101-LR-7120 | Installation of Medium Voltage Cables [Local – 05 ] | 2027-05-25 → 2027-06-01 (+7d) | 2027-05-29 → 2027-06-05 (+7d) | -104.15d → -101.45d |
| CON-LEG101-LR-7210 | Installation of Straight joints cables [Local – 05 ] | 2027-05-30 → 2027-06-06 (+7d) | 2027-05-31 → 2027-06-07 (+7d) | -104.15d → -101.45d |
| CON-LEG101-LR-7300 | Installation of Cable Termination for 13.8 kv 3Cx 500 mm², Al /XLPE/LLDPE [Local – 05 ] | 2027-06-01 → 2027-06-08 (+7d) | 2027-06-02 → 2027-06-09 (+7d) | -104.15d → -101.45d |
| CON-LEG101-LR-7390 | Installation of Medium Voltage Switchgears [Local – 05 ] | 2027-06-03 → 2027-06-10 (+7d) | 2027-06-05 → 2027-06-12 (+7d) | -104.15d → -101.45d |
| CON-LEG101-LR-7740 | Installation of Cable Termination [Local – 05 ] | 2027-06-03 → 2027-06-10 (+7d) | 2027-06-06 → 2027-06-13 (+7d) | -104.15d → -101.45d |
| 6 | **Local – 06** |  | 2027-06-05 → 2027-06-12 (+7d) |  |
| 8 | **Electrical Works** |  | 2027-06-05 → 2027-06-12 (+7d) |  |
| 2 | **Medium Voltage** |  | 2027-06-05 → 2027-06-12 (+7d) |  |
| CON-LEG101-LR-6950 | Excavation for Medium Voltage trench [Local – 06 ] | 2027-05-22 → 2027-05-29 (+7d) | 2027-05-24 → 2027-05-31 (+7d) | -103.15d → -100.45d |
| CON-LEG101-LR-7130 | Installation of Medium Voltage Cables [Local – 06 ] | 2027-05-25 → 2027-06-01 (+7d) | 2027-05-27 → 2027-06-03 (+7d) | -103.15d → -100.45d |
| CON-LEG101-LR-7220 | Installation of Straight joints cables [Local – 06 ] | 2027-05-29 → 2027-06-05 (+7d) | 2027-05-30 → 2027-06-06 (+7d) | -103.15d → -100.45d |
| CON-LEG101-LR-7310 | Installation of Cable Termination for 13.8 kv 3Cx 500 mm², Al /XLPE/LLDPE [Local – 06 ] | 2027-05-31 → 2027-06-07 (+7d) | 2027-06-01 → 2027-06-08 (+7d) | -103.15d → -100.45d |
| CON-LEG101-LR-7400 | Installation of Medium Voltage Switchgears [Local – 06 ] | 2027-06-02 → 2027-06-09 (+7d) | 2027-06-03 → 2027-06-10 (+7d) | -103.15d → -100.45d |
| CON-LEG101-LR-7750 | Installation of Cable Termination [Local – 06 ] | 2027-06-02 → 2027-06-09 (+7d) | 2027-06-05 → 2027-06-12 (+7d) | -103.15d → -100.45d |
| 7 | **Local – 07** |  | 2027-06-03 → 2027-06-10 (+7d) |  |
| 7 | **Road Works** |  | 2026-11-18 → 2026-11-25 (+7d) |  |
| 1 | **Earthworks and Site Grading** |  | 2026-11-18 → 2026-11-25 (+7d) |  |
| CON-LEG101-LR-5070 | Embankments to the parcels for roads [Local – 07 ] |  | 2026-11-18 → 2026-11-25 (+7d) | 58.57d → 61.27d |
| 8 | **Electrical Works** |  | 2027-06-03 → 2027-06-10 (+7d) |  |
| 2 | **Medium Voltage** |  | 2027-06-03 → 2027-06-10 (+7d) |  |
| CON-LEG101-LR-6960 | Excavation for Medium Voltage trench [Local – 07 ] | 2027-05-22 → 2027-05-29 (+7d) | 2027-05-24 → 2027-05-31 (+7d) | -102.15d → -99.45d |
| CON-LEG101-LR-7140 | Installation of Medium Voltage Cables [Local – 07 ] | 2027-05-25 → 2027-06-01 (+7d) | 2027-05-27 → 2027-06-03 (+7d) | -102.15d → -99.45d |

| ID | Task | Start | Finish | Complete | Total float |
| --- | --- | --- | --- | --- | --- |
| CON-LEG101-LR-7230 | Installation of Straight joints cables [Local – 07 ] | 2027-05-29 → 2027-06-05 (+7d) | 2027-05-30 → 2027-06-06 (+7d) |  | -102.15d → -99.45d |
| CON-LEG101-LR-7320 | Installation of Cable Termination for 13.8 kv 3Cx 500 mm², Al /XLPE/LLDPE [Local – 07 ] | 2027-05-31 → 2027-06-07 (+7d) | 2027-06-01 → 2027-06-08 (+7d) |  | -102.15d → -99.45d |
| CON-LEG101-LR-7410 | Installation of Medium Voltage Switchgears [Local – 07 ] | 2027-06-02 → 2027-06-09 (+7d) | 2027-06-03 → 2027-06-10 (+7d) |  | -102.15d → -99.45d |
| CON-LEG101-LR-7760 | Installation of Cable Termination [Local – 07 ] | 2027-06-02 → 2027-06-09 (+7d) | 2027-06-03 → 2027-06-10 (+7d) |  | -102.15d → -99.45d |
| 6 | **Deep Infrastructure network** |  | 2027-01-11 → 2027-01-18 (+7d) |  |  |
| 1 | **Local – 01** |  | 2026-11-07 → 2026-11-12 (+5d) |  |  |
| 1 | **LOCAL - 01 Segment-01 (From 0+000 to 1+066)** |  | 2026-11-05 → 2026-11-11 (+6d) |  |  |
| 1 | **Stormwater Utilities** |  | 2026-11-05 → 2026-11-11 (+6d) |  |  |
| 1 | **Manhole** |  | 2026-11-03 → 2026-11-10 (+7d) |  |  |
| CON-LEG101-LR-10920 | Finishing and Testing of Inlet Manholes [Local – 01 Segment-01] |  | 2026-11-03 → 2026-11-10 (+7d) |  | 71.6d → 74.3d |
| 3 | **Concrete Chambers/Outfalls** |  | 2026-11-05 → 2026-11-11 (+6d) |  |  |
| CON-LEG101-LR-10880 | FInishing and Testing of Concrete chambers [Local – 01 Segment-01] |  | 2026-11-05 → 2026-11-11 (+6d) | 75% → 85% | 80.9d → 83.6d |
| 4 | **Sanitary Sewerage** |  | 2026-11-01 → 2026-11-08 (+7d) |  |  |
| 1 | **Manhole** |  | 2026-11-01 → 2026-11-08 (+7d) |  |  |
| CON-LEG101-LR-3500 | Installation of Fiberglass Manholes [Local – 01 Segment-01] |  | 2026-11-01 → 2026-11-08 (+7d) |  | 21.85d → 24.55d |
| 2 | **LOCAL - 01 Segment-02 (From 1+066 to 2+133)** |  | 2026-11-07 → 2026-11-12 (+5d) |  |  |
| 1 | **Stormwater Utilities** |  | 2026-11-07 → 2026-11-12 (+5d) |  |  |
| 3 | **Concrete Chambers/Outfalls** |  | 2026-11-07 → 2026-11-12 (+5d) |  |  |
| CON-LEG101-LR-11030 | FInishing and Testing of Concrete chambers [Local – 01 Segment-02] |  | 2026-11-07 → 2026-11-12 (+5d) |  | 80.9d → 83.6d |
| 4 | **Sanitary Sewerage** |  | 2026-11-01 → 2026-11-08 (+7d) |  |  |
| 1 | **Manhole** |  | 2026-11-01 → 2026-11-08 (+7d) |  |  |
| CON-LEG101-LR-3510 | Installation of Fiberglass Manholes [Local – 01 Segment-02] |  | 2026-11-01 → 2026-11-08 (+7d) |  | 23.43d → 26.13d |
| 3 | **LOCAL - 01 Segment-03 (From 2+133 to 3+200)** |  | 2026-11-07 → 2026-11-12 (+5d) |  |  |
| 1 | **Stormwater Utilities** |  | 2026-11-07 → 2026-11-12 (+5d) |  |  |
| 1 | **Manhole** |  | 2026-11-01 → 2026-11-08 (+7d) |  |  |
| CON-LEG101-LR-11070 | Finishing and Testing of Inlet Manholes [Local – 01 Segment-03] |  | 2026-11-01 → 2026-11-08 (+7d) |  | 50.55d → 53.25d |
| 3 | **Concrete Chambers/Outfalls** |  | 2026-11-07 → 2026-11-12 (+5d) |  |  |
| CON-LEG101-LR-11130 | FInishing and Testing of Concrete chambers [Local – 01 Segment-03] |  | 2026-11-07 → 2026-11-12 (+5d) |  | 80.9d → 83.6d |
| 4 | **Sanitary Sewerage** |  | 2026-11-01 → 2026-11-08 (+7d) |  |  |
| 1 | **Manhole** |  | 2026-11-01 → 2026-11-08 (+7d) |  |  |
| CON-LEG101-LR-3520 | Installation of Fiberglass Manholes [Local – 01 Segment-03] |  | 2026-11-01 → 2026-11-08 (+7d) |  | 49.85d → 52.55d |
| 2 | **Local – 02** |  | 2026-11-07 → 2026-11-12 (+5d) |  |  |
| 1 | **Stormwater Utilities** |  | 2026-11-07 → 2026-11-12 (+5d) |  |  |
| 1 | **Manhole** |  | 2026-11-01 → 2026-11-08 (+7d) |  |  |
| CON-LEG101-LR-11180 | Finishing and Testing of Inlet Manholes [Local – 02 ] |  | 2026-11-01 → 2026-11-08 (+7d) |  | 73.05d → 75.75d |
| 3 | **Concrete Chambers/Outfalls** |  | 2026-11-07 → 2026-11-12 (+5d) |  |  |
| CON-LEG101-LR-11230 | FInishing and Testing of Concrete chambers [Local – 02 ] |  | 2026-11-07 → 2026-11-12 (+5d) |  | 80.9d → 83.6d |
| 4 | **Sanitary Sewerage** |  | 2026-11-01 → 2026-11-08 (+7d) |  |  |
| 1 | **Manhole** |  | 2026-11-01 → 2026-11-08 (+7d) |  |  |
| CON-LEG101-LR-3530 | Installation of Fiberglass Manholes [Local – 02 ] |  | 2026-11-01 → 2026-11-08 (+7d) |  | -34.24d → -40.24d |
| 3 | **Local – 03** |  | 2026-11-24 → 2026-11-17 (-7d) |  |  |
| 1 | **Stormwater Utilities** |  | 2026-11-24 → 2026-11-17 (-7d) |  |  |
| 1 | **Manhole** |  | 2026-11-24 → 2026-11-15 (-9d) |  |  |
| CON-LEG101-LR-11280 | Finishing and Testing of Inlet Manholes [Local – 03 ] | 2026-11-01 → 2026-10-14 A (-18d) | 2026-11-24 → 2026-11-15 (-9d) | 0% → 70% | 74.1d → 82.1d |
| 3 | **Concrete Chambers/Outfalls** |  | 2026-11-19 → 2026-11-17 (-2d) |  |  |
| CON-LEG101-LR-11340 | FInishing and Testing of Concrete chambers [Local – 03 ] | 2026-11-07 → 2026-10-14 A (-24d) | 2026-11-19 → 2026-11-17 (-2d) | 0% → 70% | 80.9d → 83.6d |
| 4 | **Local – 04** |  | 2027-01-10 → 2027-01-17 (+7d) |  |  |
| 1 | **Stormwater Utilities** |  | 2027-01-10 → 2027-01-17 (+7d) |  |  |
| 2 | **Pipe Work** |  | 2026-12-08 → 2026-12-15 (+7d) |  |  |
| CON-LEG101-LR-3930 | Testing for Stormwater Utilities Network [Local – 04 ] | 2026-11-18 → 2026-11-25 (+7d) | 2026-12-01 → 2026-12-08 (+7d) |  | -48.24d → -54.24d |
| CON-LEG101-LR-4140 | Installation of Micron Marker Magnetic Tape [Local – 04 ] | 2026-12-02 → 2026-12-09 (+7d) | 2026-12-03 → 2026-12-10 (+7d) |  | -48.24d → -54.24d |
| CON-LEG101-LR-4250 | Backfilling to Subgrade Elevation [Local – 04 ] | 2026-12-05 → 2026-12-12 (+7d) | 2026-12-08 → 2026-12-15 (+7d) |  | -48.24d → -54.24d |
| 1 | **Manhole** |  | 2026-12-16 → 2026-12-23 (+7d) |  |  |
| CON-LEG101-LR-4370 | Installation of Inlet Manholes [Local – 04 ] |  | 2026-11-22 → 2026-11-29 (+7d) |  | -40.24d → -46.24d |
| CON-LEG101-LR-11380 | Backfilling of Inlet Manholes [Local – 04 ] | 2026-11-23 → 2026-11-30 (+7d) | 2026-11-29 → 2026-12-06 (+7d) |  | -40.24d → -46.24d |
| CON-LEG101-LR-11390 | Finishing and Testing of Inlet Manholes [Local – 04 ] | 2026-11-30 → 2026-12-07 (+7d) | 2026-12-16 → 2026-12-23 (+7d) |  | 69.9d → 63.9d |
| 3 | **Concrete Chambers/Outfalls** | 2026-11-23 → 2026-11-30 (+7d) | 2027-01-10 → 2027-01-17 (+7d) |  |  |
| CON-LEG101-LR-11400 | Excavation of Concrete chambers [Local – 04 ] | 2026-11-23 → 2026-11-30 (+7d) | 2026-11-29 → 2026-12-06 (+7d) |  | 12.85d → 15.55d |
| CON-LEG101-LR-11410 | PC of Concrete chambers [Local – 04 ] | 2026-11-30 → 2026-12-07 (+7d) | 2026-12-01 → 2026-12-08 (+7d) |  | 12.85d → 15.55d |
| CON-LEG101-LR-4470 | Installation of Concrete chambers [Local – 04 ] | 2026-12-02 → 2026-12-09 (+7d) | 2026-12-13 → 2026-12-20 (+7d) |  | 12.85d → 15.55d |
| CON-LEG101-LR-11420 | Installation UPVC Pipes to Concrete chambers [Local – 04 ] | 2026-12-14 → 2026-12-21 (+7d) | 2026-12-20 → 2026-12-27 (+7d) |  | 12.85d → 15.55d |
| CON-LEG101-LR-11430 | Backfilling to Concrete chambers [Local – 04 ] | 2026-12-21 → 2026-12-28 (+7d) | 2026-12-27 → 2027-01-03 (+7d) |  | 12.85d → 15.55d |
| CON-LEG101-LR-11440 | FInishing and Testing of Concrete chambers [Local – 04 ] | 2026-12-28 → 2027-01-04 (+7d) | 2027-01-10 → 2027-01-17 (+7d) |  | 48.85d → 42.85d |
| 4 | **Sanitary Sewerage** |  | 2026-11-30 → 2026-12-07 (+7d) |  |  |
| 2 | **Pipe Work** |  | 2026-11-30 → 2026-12-07 (+7d) |  |  |
| CON-LEG101-LR-3180 | Concrete encasement, pipe dia 200 and 350 mm [Local – 04 ] | 2026-11-18 → 2026-11-25 (+7d) | 2026-11-21 → 2026-11-28 (+7d) |  | -41.24d → -47.24d |
| CON-LEG101-LR-3360 | Installation of Micron Marker Magnetic Tape [Local – 04 ] | 2026-11-22 → 2026-11-29 (+7d) | 2026-11-23 → 2026-11-30 (+7d) |  | -41.24d → -47.24d |
| CON-LEG101-LR-3450 | Backfilling to Subgrade Elevation [Local – 04 ] | 2026-11-24 → 2026-12-01 (+7d) | 2026-11-30 → 2026-12-07 (+7d) |  | -41.24d → -47.24d |
| 1 | **Manhole** |  | 2026-11-21 → 2026-11-28 (+7d) |  |  |
| CON-LEG101-LR-3540 | Installation of Fiberglass Manholes [Local – 04 ] |  | 2026-11-21 → 2026-11-28 (+7d) |  | -33.24d → -39.24d |

| ID | Task | Start | Finish | Complete | Total float |
| --- | --- | --- | --- | --- | --- |
| 5 | **Local – 05** |  | 2026-11-18 → 2026-11-25 (+7d) |  |  |
| 4 | **Sanitary Sewerage** |  | 2026-11-18 → 2026-11-25 (+7d) |  |  |
| 1 | **Manhole** |  | 2026-11-18 → 2026-11-25 (+7d) |  |  |
| CON-LEG101-LR-3550 | Installation of Fiberglass Manholes [Local – 05 ] |  | 2026-11-18 → 2026-11-25 (+7d) |  | 42.95d → 45.65d |
| 8 | **Local – 08** |  | 2027-01-11 → 2027-01-18 (+7d) |  |  |
| 1 | **Stormwater Utilities** |  | 2027-01-11 → 2027-01-18 (+7d) |  |  |
| 1 | **Manhole** |  | 2026-12-17 → 2026-12-24 (+7d) |  |  |
| CON-LEG101-LR-11750 | Finishing and Testing of Inlet Manholes [Local – 08 ] |  | 2026-12-17 → 2026-12-24 (+7d) |  | 69.9d → 63.9d |
| 3 | **Concrete Chambers/Outfalls** |  | 2027-01-11 → 2027-01-18 (+7d) |  |  |
| CON-LEG101-LR-11800 | FInishing and Testing of Concrete chambers [Local – 08 ] |  | 2027-01-11 → 2027-01-18 (+7d) |  | 48.85d → 42.85d |
| 7 | **Shallow infrastructure network** |  | 2027-09-26 → 2027-10-03 (+7d) |  |  |
| 1 | **Local – 01** |  | 2027-07-20 → 2027-07-27 (+7d) |  |  |
| 1 | **LOCAL - 01 Segment-01 (From 0+000 to 1+066)** |  | 2027-07-18 → 2027-07-25 (+7d) |  |  |
| 1 | **Electrical Works** |  | 2027-06-23 → 2027-06-30 (+7d) |  |  |
| 3 | **Low Voltage** |  | 2027-06-23 → 2027-06-30 (+7d) |  |  |
| CON-LEG101-LR-7780 | Excavation works for Low Voltage Cables [Local – 01 Segment-01] |  | 2027-06-16 → 2027-06-23 (+7d) |  | -100.45d → -106.45d |
| CON-LEG101-LR-7880 | Installation of Low Voltage Cables [Local – 01 Segment-01] |  | 2027-06-21 → 2027-06-28 (+7d) |  | -75.4d → -81.4d |
| CON-LEG101-LR-8760 | Installation of Earthing System [Local – 01 Segment-01] |  | 2027-06-23 → 2027-06-30 (+7d) |  | 44.3d → 38.3d |
| 10 | **Telecommunications** |  | 2027-07-18 → 2027-07-25 (+7d) |  |  |
| CON-LEG101-LR-9330 | Installation of Reinforced concrete manhole [Local – 01 Segment-01] |  | 2027-07-18 → 2027-07-25 (+7d) |  | 23.15d → 17.15d |
| CON-LEG101-LR-9030 | Installation of Sand encased duct banks for secondary network [Local – 01 Segment-01] |  | 2027-06-28 → 2027-07-05 (+7d) |  | 23.15d → 17.15d |
| CON-LEG101-LR-9130 | Installation of Sand and soil encased duct banks, for combined network of primary and secondary [Local – 01 Segment-01 |  | 2027-07-07 → 2027-07-14 (+7d) |  | 23.15d → 17.15d |
| CON-LEG101-LR-9230 | Installation of Concrete encased duct banks for for combined network of primary and secondary [Local – 01 Segment-01] |  | 2027-07-15 → 2027-07-22 (+7d) |  | 23.15d → 17.15d |
| 11 | **CCTV feeding system and GSM** |  | 2027-06-30 → 2027-07-07 (+7d) |  |  |
| CON-LEG101-LR-8550 | Excavation works for Low Voltage Cables for CCTV feeding system and GSM [Local – 01 Segment-01] |  | 2027-06-16 → 2027-06-23 (+7d) |  | -100.45d → -106.45d |
| CON-LEG101-LR-9430 | Installation of Fiber Optic Patch Panel 12 port [Local – 01 Segment-01] |  | 2027-06-20 → 2027-06-27 (+7d) |  | 36.4d → 30.4d |
| CON-LEG101-LR-9450 | Installation of Modular Industrial Switches for main pole [Local – 01 Segment-01] |  | 2027-06-20 → 2027-06-27 (+7d) |  | 36.4d → 30.4d |
| CON-LEG101-LR-9460 | Installation of 8POE ports Industrial Switches for remote poles [Local – 01 Segment-01] |  | 2027-06-21 → 2027-06-28 (+7d) |  | 36.4d → 30.4d |
| CON-LEG101-LR-9520 | Installation of Core Switch [Local – 01 Segment-01] |  | 2027-06-21 → 2027-06-28 (+7d) |  | 36.4d → 30.4d |
| CON-LEG101-LR-9540 | Installation of Access Switch 48 port [Local – 01 Segment-01] |  | 2027-06-22 → 2027-06-29 (+7d) |  | 36.4d → 30.4d |
| CON-LEG101-LR-9560 | Installation of Server [Local – 01 Segment-01] |  | 2027-06-22 → 2027-06-29 (+7d) |  | 36.4d → 30.4d |
| CON-LEG101-LR-9590 | Installation of Stand rack 42U- 19" [Local – 01 Segment-01] |  | 2027-06-22 → 2027-06-29 (+7d) |  | 36.4d → 30.4d |
| CON-LEG101-LR-9610 | Installation of IP Outdoor CCTV POE Camera,5 MP, Metal Housing [Local – 01 Segment-01] |  | 2027-06-23 → 2027-06-30 (+7d) |  | 36.4d → 30.4d |
| CON-LEG101-LR-9690 | Installation of Outdoor PTZ IP66 [Local – 01 Segment-01] |  | 2027-06-23 → 2027-06-30 (+7d) |  | 36.4d → 30.4d |
| CON-LEG101-LR-9850 | Installation of Horizontal Power Distribution Unit (min 8 outlets) [Local – 01 Segment-01] |  | 2027-06-30 → 2027-07-07 (+7d) |  | 36.4d → 30.4d |
| CON-LEG101-LR-9940 | Installation of Short Range wireless point to point wireless bridge [Local – 01 Segment-01] |  | 2027-06-30 → 2027-07-07 (+7d) |  | 36.4d → 30.4d |
| CON-LEG101-LR-8620 | Installation of Low Voltage Cables for CCTV feeding system and GSM [Local – 01 Segment-01] |  | 2027-06-19 → 2027-06-26 (+7d) |  | 36.4d → 30.4d |
| CON-LEG101-LR-9780 | Installation of Security workstation with 1 x 19" LED screen [Local – 01 Segment-01] | 2027-06-23 → 2027-06-30 (+7d) | 2027-06-24 → 2027-07-01 (+7d) |  | 36.4d → 30.4d |
| CON-LEG101-LR-9790 | Installation of LED Screen 43" (24/7 operation) with Ethernet decoders [Local – 01 Segment-01] | 2027-06-24 → 2027-07-01 (+7d) | 2027-06-27 → 2027-07-04 (+7d) |  | 36.4d → 30.4d |
| CON-LEG101-LR-9830 | Installation of Network Video Recorder 4k 64 Channel [Local – 01 Segment-01] | 2027-06-27 → 2027-07-04 (+7d) | 2027-06-28 → 2027-07-05 (+7d) |  | 36.4d → 30.4d |
| CON-LEG101-LR-9840 | Installation of Keypad [Local – 01 Segment-01] | 2027-06-28 → 2027-07-05 (+7d) | 2027-06-30 → 2027-07-07 (+7d) |  | 36.4d → 30.4d |
| 12 | **Earthing System** | 2027-06-30 → 2027-07-07 (+7d) | 2027-07-03 → 2027-07-10 (+7d) |  |  |
| CON-LEG101-LR-8280 | Installation of Earthing for Distribution panels,SL feeder pillars, KWH, Unit substations and RMU [Local – 01 Segment-01 | 2027-06-30 → 2027-07-07 (+7d) | 2027-07-03 → 2027-07-10 (+7d) |  | 36.4d → 30.4d |
| 9 | **Road Lighting** |  | 2027-07-14 → 2027-07-21 (+7d) |  |  |
| CON-LEG101-LR-8080 | Installation of Lighting poles [Local – 01 Segment-01] |  | 2027-06-14 → 2027-06-21 (+7d) |  | -109.15d → -104.15d |
| CON-LEG101-LR-8180 | Installation of Street Lighting Luminaire [Local – 01 Segment-01] |  | 2027-06-15 → 2027-06-22 (+7d) |  | -109.15d → -100.45d |
| CON-LEG101-LR-7420 | Installation of Unit Substation Including concrete foundations and fencing [Local – 01 Segment-01] |  | 2027-06-23 → 2027-06-30 (+7d) |  | -100.45d → -106.45d |
| CON-LEG101-LR-8430 | Installation of Street Lighting feeder pillars / Lighting panels [Local – 01 Segment-01] |  | 2027-06-16 → 2027-06-23 (+7d) |  | -109.15d → -100.45d |
| CON-LEG101-LR-8330 | Installation of Earthing for Streetlighting feeders for every end pole circuits. [Local – 01 Segment-01] |  | 2027-07-14 → 2027-07-21 (+7d) |  | -100.45d → -106.45d |
| CON-LEG101-LR-7500 | Installation of Ring Main Unit RMU [Local – 01 Segment-01] | 2027-06-23 → 2027-06-30 (+7d) | 2027-07-11 → 2027-07-18 (+7d) |  | -100.45d → -106.45d |
| 2 | **LOCAL - 01 Segment-02 (From 1+066 to 2+133)** |  | 2027-07-20 → 2027-07-27 (+7d) |  |  |
| 1 | **Electrical Works** |  | 2027-07-15 → 2027-07-22 (+7d) |  |  |
| 3 | **Low Voltage** |  | 2027-07-15 → 2027-07-22 (+7d) |  |  |
| CON-LEG101-LR-8770 | Installation of Earthing System [Local – 01 Segment-02] |  | 2027-07-15 → 2027-07-22 (+7d) |  | 25.75d → 19.75d |
| 12 | **Earthing System** |  | 2027-07-20 → 2027-07-27 (+7d) |  |  |
| CON-LEG101-LR-8290 | Installation of Earthing for Distribution panels,SL feeder pillars, KWH, Unit substations and RMU [Local – 01 Segment-02 |  | 2027-07-20 → 2027-07-27 (+7d) |  | -100.45d → -106.45d |
| 9 | **Road Lighting** |  | 2027-06-17 → 2027-06-24 (+7d) |  |  |
| CON-LEG101-LR-8340 | Installation of Earthing for Streetlighting feeders for every end pole circuits. [Local – 01 Segment-02] |  | 2027-06-17 → 2027-06-24 (+7d) |  | -109.15d → -100.45d |
| 3 | **LOCAL - 01 Segment-03 (From 2+133 to 3+200)** |  | 2027-07-04 → 2027-06-30 (-4d) |  |  |
| 5 | **TSE Network** |  | 2026-11-03 → 2026-11-10 (+7d) |  |  |
| 1 | **Valves/Chamber** |  | 2026-11-03 → 2026-11-10 (+7d) |  |  |
| CON-LEG101-LR-15040 | Installation of Air Valve chambers [Local – 01 Segment-03] |  | 2026-11-03 → 2026-11-10 (+7d) |  | 86.05d → 95.5d |
| CON-LEG101-LR-2630 | Installation of Wash out chambers [Local – 01 Segment-03] |  | 2026-11-02 → 2026-11-09 (+7d) |  | 86.05d → 95.5d |
| 6 | **Public Water Utility Distribution** |  | 2026-11-03 → 2026-11-10 (+7d) |  |  |
| 1 | **Valves/Chamber** |  | 2026-11-03 → 2026-11-10 (+7d) |  |  |
| CON-LEG101-LR-1270 | Installation of Air Valve chambers [Local – 01 Segment-03] |  | 2026-11-03 → 2026-11-10 (+7d) |  | 166d → 160d |
| CON-LEG101-LR-1230 | Installation of Wash out chambers [Local – 01 Segment-03] |  | 2026-11-02 → 2026-11-09 (+7d) |  | 166d → 160d |
| 10 | **Telecommunications** |  | 2027-06-24 → 2027-06-17 (-7d) |  |  |
| CON-LEG101-LR-9350 | Installation of Reinforced concrete manhole [Local – 01 Segment-03] |  | 2027-06-24 → 2027-06-17 (-7d) |  | -24.3d → -18.7d |
| CON-LEG101-LR-8850 | Installation of Sand and soil encased duct banks for primary network [Local – 01 Segment-03] |  | 2027-05-10 → 2027-05-13 (+3d) | 40% → 60% | -24.3d → -18.7d |

| ID | Task | Start | Finish | Complete | Total float |
| --- | --- | --- | --- | --- | --- |
| CON-LEG101-LR-8950 | Installation of Concrete encased duct banks for primary network [Local – 01 Segment-03] |  | 2027-05-23 → 2027-05-24 (+1d) | 40% → 60% | -24.3d → -18.7d |
| CON-LEG101-LR-9050 | Installation of Sand encased duct banks for secondary network [Local – 01 Segment-03] |  | 2027-06-01 → 2027-05-30 (-2d) | 40% → 60% | -24.3d → -18.7d |
| CON-LEG101-LR-9150 | Installation of Sand and soil encased duct banks, for combined network of primary and secondary [Local – 01 Segment-03 |  | 2027-06-14 → 2027-06-08 (-6d) | 40% → 60% | -24.3d → -18.7d |
| 12 | **Earthing System** | 2027-06-24 → 2027-06-17 (-7d) | 2027-07-04 → 2027-06-27 (-7d) |  |  |
| CON-LEG101-LR-8300 | Installation of Earthing for Distribution panels,SL feeder pillars, KWH, Unit substations and RMU [Local – 01 Segment-03 | 2027-06-24 → 2027-06-17 (-7d) | 2027-07-04 → 2027-06-27 (-7d) |  | -24.3d → -18.7d |
| 9 | **Road Lighting** |  | 2027-06-23 → 2027-06-30 (+7d) |  |  |
| CON-LEG101-LR-8100 | Installation of Lighting poles [Local – 01 Segment-03] |  | 2027-05-02 → 2027-05-09 (+7d) |  | -87.65d → -78.95d |
| CON-LEG101-LR-8200 | Installation of Street Lighting Luminaire [Local – 01 Segment-03] |  | 2027-05-03 → 2027-05-10 (+7d) |  | -73.45d → -64.75d |
| CON-LEG101-LR-8450 | Installation of Street Lighting feeder pillars / Lighting panels [Local – 01 Segment-03] |  | 2027-06-06 → 2027-06-13 (+7d) |  | -98.85d → -90.15d |
| CON-LEG101-LR-8350 | Installation of Earthing for Streetlighting feeders for every end pole circuits. [Local – 01 Segment-03] |  | 2027-06-23 → 2027-06-30 (+7d) |  | -109.15d → -100.45d |
| 2 | **Local – 02** |  | 2027-06-30 → 2027-07-07 (+7d) |  |  |
| 5 | **TSE Network** |  | 2027-06-13 → 2026-11-10 (-215d) |  |  |
| 1 | **Valves/Chamber** |  | 2027-06-13 → 2026-11-10 (-215d) |  |  |
| CON-LEG101-LR-2410 | Installation of Wash out Valves [Local – 02 ] |  | 2026-11-03 → 2026-11-10 (+7d) |  | 49.1d → 43.1d |
| CON-LEG101-LR-2710 | Installation of Wash out chambers [Local – 02 ] |  | 2026-11-03 → 2026-11-10 (+7d) |  | 49.1d → 43.1d |
| CON-LEG101-LR-2490 | Installation of Fire Hydrant [Local – 02 ] |  | 2027-06-13 → 2026-10-04 A (-252d) | 95% → 100% | -94.7d → none |
| 6 | **Public Water Utility Distribution** |  | 2026-11-04 → 2026-11-11 (+7d) |  |  |
| 1 | **Valves/Chamber** |  | 2026-11-04 → 2026-11-11 (+7d) |  |  |
| CON-LEG101-LR-15080 | Installation of Air Valve chambers [Local – 02 ] |  | 2026-11-03 → 2026-11-10 (+7d) |  | 69.7d → 69.65d |
| CON-LEG101-LR-1030 | Installation of Gate (Sluice) valves (Direct buried) [Local – 02 ] |  | 2026-11-04 → 2026-11-11 (+7d) |  | 69.7d → 69.65d |
| CON-LEG101-LR-15070 | Installation of Wash out chambers [Local – 02 ] |  | 2026-11-02 → 2026-11-09 (+7d) |  | 49.9d → 43.9d |
| 1 | **Electrical Works** |  | 2027-06-27 → 2027-07-04 (+7d) |  |  |
| 3 | **Low Voltage** |  | 2027-06-27 → 2027-07-04 (+7d) |  |  |
| CON-LEG101-LR-8490 | Installation of Low Voltage Distribution Panel [Local – 02 ] | 2027-06-06 → 2027-06-13 (+7d) | 2027-06-16 → 2027-06-23 (+7d) |  | -103.95d → -95.25d |
| CON-LEG101-LR-8540 | Installation of KWH Meters Walls [Local – 02 ] | 2027-06-17 → 2027-06-24 (+7d) | 2027-06-24 → 2027-07-01 (+7d) |  | 41d → 35d |
| CON-LEG101-LR-8790 | Installation of Earthing System [Local – 02 ] | 2027-06-26 → 2027-07-03 (+7d) | 2027-06-27 → 2027-07-04 (+7d) |  | 41d → 35d |
| 11 | **CCTV feeding system and GSM** |  | 2027-06-14 → 2027-06-21 (+7d) |  |  |
| CON-LEG101-LR-9470 | Installation of 8POE ports Industrial Switches for remote poles [Local – 02 ] |  | 2027-05-03 → 2027-05-10 (+7d) |  | -78.95d → -70.25d |
| CON-LEG101-LR-9570 | Installation of Server [Local – 02 ] |  | 2027-05-04 → 2027-05-11 (+7d) |  | -78.95d → -70.25d |
| CON-LEG101-LR-9640 | Installation of IP Outdoor CCTV POE Camera,5 MP, Metal Housing [Local – 02 ] |  | 2027-05-05 → 2027-05-12 (+7d) |  | -78.95d → -70.25d |
| CON-LEG101-LR-9720 | Installation of Outdoor PTZ IP66 [Local – 02 ] |  | 2027-05-05 → 2027-05-12 (+7d) |  | -78.95d → -70.25d |
| CON-LEG101-LR-9970 | Installation of Short Range wireless point to point wireless bridge [Local – 02 ] |  | 2027-06-14 → 2027-06-21 (+7d) |  | -101.65d → -92.95d |
| CON-LEG101-LR-9800 | Installation of LED Screen 43" (24/7 operation) with Ethernet decoders [Local – 02 ] | 2027-06-06 → 2027-06-13 (+7d) | 2027-06-13 → 2027-06-20 (+7d) |  | -101.65d → -92.95d |
| 12 | **Earthing System** | 2027-06-23 → 2027-06-30 (+7d) | 2027-06-30 → 2027-07-07 (+7d) |  |  |
| CON-LEG101-LR-8310 | Installation of Earthing for Distribution panels,SL feeder pillars, KWH, Unit substations and RMU [Local – 02 ] | 2027-06-23 → 2027-06-30 (+7d) | 2027-06-30 → 2027-07-07 (+7d) |  | -109.15d → -100.45d |
| 9 | **Road Lighting** |  | 2027-06-26 → 2027-07-03 (+7d) |  |  |
| CON-LEG101-LR-8460 | Installation of Street Lighting feeder pillars / Lighting panels [Local – 02 ] |  | 2027-06-21 → 2027-06-28 (+7d) |  | -107.65d → -98.95d |
| CON-LEG101-LR-8360 | Installation of Earthing for Streetlighting feeders for every end pole circuits. [Local – 02 ] |  | 2027-06-26 → 2027-07-03 (+7d) |  | -109.15d → -100.45d |
| CON-LEG101-LR-7430 | Installation of Unit Substation Including concrete foundations and fencing [Local – 02 ] | 2027-05-03 → 2027-05-10 (+7d) | 2027-05-10 → 2027-05-22 (+12d) |  | -89.65d → -80.95d |
| CON-LEG101-LR-7510 | Installation of Ring Main Unit RMU [Local – 02 ] | 2027-06-06 → 2027-06-13 (+7d) | 2027-06-20 → 2027-06-27 (+7d) |  | -107.65d → -98.95d |
| 3 | **Local – 03** |  | 2027-08-09 → 2027-08-14 (+5d) |  |  |
| 5 | **TSE Network** |  | 2027-06-13 → 2026-11-12 (-213d) |  |  |
| 1 | **Valves/Chamber** |  | 2027-06-13 → 2026-11-12 (-213d) |  |  |
| CON-LEG101-LR-2500 | Installation of Fire Hydrant [Local – 03 ] |  | 2027-06-13 → 2026-10-05 A (-251d) | 95% → 100% | -94.7d → none |
| CON-LEG101-LR-2720 | Installation of Air Valve chambers [Local – 03 ] |  | 2026-11-05 → 2026-11-12 (+7d) |  | 49.1d → 43.1d |
| CON-LEG101-LR-2640 | Installation of Wash out chambers [Local – 03 ] |  | 2026-11-04 → 2026-11-11 (+7d) |  | 49.1d → 43.1d |
| 6 | **Public Water Utility Distribution** |  | 2026-11-07 → 2026-11-14 (+7d) |  |  |
| 1 | **Valves/Chamber** |  | 2026-11-07 → 2026-11-14 (+7d) |  |  |
| CON-LEG101-LR-15110 | Installation of Air Valve chambers [Local – 03 ] |  | 2026-11-07 → 2026-11-14 (+7d) |  | 49.1d → 43.1d |
| 1 | **Electrical Works** |  | 2027-06-19 → 2027-06-26 (+7d) |  |  |
| 3 | **Low Voltage** |  | 2027-06-19 → 2027-06-26 (+7d) |  |  |
| CON-LEG101-LR-7820 | Excavation works for Low Voltage Cables [Local – 03 ] | 2027-05-19 → 2027-05-26 (+7d) | 2027-06-01 → 2027-06-08 (+7d) |  | -128.95d → -111.55d |
| CON-LEG101-LR-7920 | Installation of Low Voltage Cables [Local – 03 ] | 2027-06-02 → 2027-06-09 (+7d) | 2027-06-15 → 2027-06-22 (+7d) |  | -128.95d → -111.55d |
| CON-LEG101-LR-8800 | Installation of Earthing System [Local – 03 ] | 2027-06-16 → 2027-06-23 (+7d) | 2027-06-19 → 2027-06-26 (+7d) |  | -128.95d → -111.55d |
| 10 | **Telecommunications** |  | 2027-07-22 → 2027-07-20 (-2d) |  |  |
| CON-LEG101-LR-8870 | Installation of Sand and soil encased duct banks for primary network [Local – 03 ] |  | 2027-06-15 → 2027-06-22 (+7d) |  | -125.85d → -108.45d |
| CON-LEG101-LR-9070 | Installation of Sand encased duct banks for secondary network [Local – 03 ] | 2027-06-20 → 2026-10-15 A (-248d) | 2027-06-27 → 2027-07-01 (+4d) | 0% → 30% | -128.95d → -111.55d |
| CON-LEG101-LR-9170 | Installation of Sand and soil encased duct banks, for combined network of primary and secondary [Local – 03 ] | 2027-06-28 → 2026-10-15 A (-256d) | 2027-07-17 → 2027-07-15 (-2d) | 0% → 30% | -128.95d → -111.55d |
| CON-LEG101-LR-9270 | Installation of Concrete encased duct banks for for combined network of primary and secondary [Local – 03 ] | 2027-07-18 → 2026-10-15 A (-276d) | 2027-07-22 → 2027-07-20 (-2d) | 0% → 30% | -128.95d → -111.55d |
| 11 | **CCTV feeding system and GSM** |  | 2027-07-04 → 2027-07-08 (+4d) |  |  |
| CON-LEG101-LR-9980 | Installation of Short Range wireless point to point wireless bridge [Local – 03 ] |  | 2027-07-04 → 2027-07-08 (+4d) |  | 20.7d → 16.8d |
| CON-LEG101-LR-8590 | Excavation works for Low Voltage Cables for CCTV feeding system and GSM [Local – 03 ] |  | 2027-06-28 → 2027-07-03 (+5d) |  | -4d → -7.9d |
| CON-LEG101-LR-8660 | Installation of Low Voltage Cables for CCTV feeding system and GSM [Local – 03 ] |  | 2027-06-30 → 2027-07-05 (+5d) |  | 20.7d → 16.8d |
| CON-LEG101-LR-9480 | Installation of 8POE ports Industrial Switches for remote poles [Local – 03 ] |  | 2027-06-30 → 2027-07-05 (+5d) |  | 20.7d → 16.8d |
| CON-LEG101-LR-9650 | Installation of IP Outdoor CCTV POE Camera,5 MP, Metal Housing [Local – 03 ] |  | 2027-07-01 → 2027-07-06 (+5d) |  | 20.7d → 16.8d |
| CON-LEG101-LR-9730 | Installation of Outdoor PTZ IP66 [Local – 03 ] |  | 2027-07-03 → 2027-07-07 (+4d) |  | 20.7d → 16.8d |
| 12 | **Earthing System** | 2027-08-02 → 2027-08-05 (+3d) | 2027-08-09 → 2027-08-14 (+5d) |  |  |
| CON-LEG101-LR-15170 | Installation of Earthing for Distribution panels,SL feeder pillars, KWH, Unit substations and RMU [Local – 03 ] | 2027-08-02 → 2027-08-05 (+3d) | 2027-08-09 → 2027-08-14 (+5d) |  | -4d → -7.9d |
| 9 | **Road Lighting** |  | 2027-08-01 → 2027-08-05 (+4d) |  |  |
| CON-LEG101-LR-8120 | Installation of Lighting poles [Local – 03 ] |  | 2027-06-14 → 2027-06-17 (+3d) | 30% → 50% | -95.45d → -96.5d |

| ID | Task | Start | Finish | Complete | Total float |
| --- | --- | --- | --- | --- | --- |
| CON-LEG101-LR-7440 | Installation of Unit Substation Including concrete foundations and fencing [Local – 03 ] |  | 2027-07-07 → 2027-07-12 (+5d) |  | -4d → -7.9d |
| CON-LEG101-LR-8220 | Installation of Street Lighting Luminaire [Local – 03 ] | 2027-06-14 → 2026-10-14 A (-243d) | 2027-06-22 → 2027-06-21 (-1d) | 0% → 50% | 1.5d → 2d |
| CON-LEG101-LR-7520 | Installation of Ring Main Unit RMU [Local – 03 ] | 2027-07-08 → 2027-07-12 (+4d) | 2027-07-25 → 2027-07-29 (+4d) |  | -4d → -7.9d |
| CON-LEG101-LR-8370 | Installation of Earthing for Streetlighting feeders for every end pole circuits. [Local – 03 ] | 2027-07-26 → 2027-07-29 (+3d) | 2027-08-01 → 2027-08-05 (+4d) |  | -4d → -7.9d |
| 4 | **Local – 04** |  | 2027-09-26 → 2027-10-03 (+7d) |  |  |
| 5 | **TSE Network** |  | 2027-04-20 → 2027-04-27 (+7d) |  |  |
| 2 | **Pipe Work** |  | 2027-01-10 → 2027-01-17 (+7d) |  |  |
| CON-LEG101-LR-1350 | Excavation for TSE Network [Local – 04 ] |  | 2026-12-10 → 2026-12-17 (+7d) |  | -48.24d → -54.24d |
| CON-LEG101-LR-1470 | Granular bedding for TSE Network [Local – 04 ] |  | 2026-12-12 → 2026-12-19 (+7d) |  | -48.24d → -54.24d |
| CON-LEG101-LR-1580 | Installation of Pipe for TSE Network [Local – 04 ] |  | 2026-12-19 → 2026-12-26 (+7d) |  | -48.24d → -54.24d |
| CON-LEG101-LR-1910 | Granular Surround for TSE Network [Local – 04 ] |  | 2027-01-02 → 2027-01-09 (+7d) |  | -48.24d → -54.24d |
| CON-LEG101-LR-2020 | Installation of Micron Marker Magnetic Tape [Local – 04 ] |  | 2027-01-03 → 2027-01-10 (+7d) |  | -48.24d → -54.24d |
| CON-LEG101-LR-2130 | Backfilling to Subgrade Elevation [Local – 04 ] |  | 2027-01-10 → 2027-01-17 (+7d) |  | -48.24d → -54.24d |
| CON-LEG101-LR-1690 | Testing for TSE Network [Local – 04 ] | 2026-12-19 → 2026-12-26 (+7d) | 2026-12-26 → 2027-01-02 (+7d) |  | -48.24d → -54.24d |
| CON-LEG101-LR-1810 | Concrete encasement, pipe dia 110 mm [Local – 04 ] | 2026-12-26 → 2027-01-02 (+7d) | 2026-12-29 → 2027-01-05 (+7d) |  | -48.24d → -54.24d |
| 1 | **Valves/Chamber** | 2027-01-03 → 2027-01-10 (+7d) | 2027-04-20 → 2027-04-27 (+7d) |  |  |
| CON-LEG101-LR-2730 | Installation of Air Valve chambers [Local – 04 ] | 2027-01-03 → 2027-01-10 (+7d) | 2027-01-27 → 2027-02-03 (+7d) |  | -32.48d → -38.48d |
| CON-LEG101-LR-15060 | Installation of Wash-out Valve chambers [Local – 04 ] | 2027-01-27 → 2027-02-03 (+7d) | 2027-02-27 → 2027-03-06 (+7d) |  | -32.48d → -38.48d |
| CON-LEG101-LR-2240 | Installation of Gate (Sluice) valves (Direct buried) [Local – 04 ] | 2027-01-27 → 2027-02-03 (+7d) | 2027-02-07 → 2027-02-18 (+11d) |  | -20.48d → -26.48d |
| CON-LEG101-LR-2350 | Installation of Wash-out Valves [Local – 04 ] | 2027-02-27 → 2027-03-06 (+7d) | 2027-03-16 → 2027-03-23 (+7d) |  | -32.48d → -38.48d |
| CON-LEG101-LR-2430 | Installation of Air Valves [Local – 04 ] | 2027-03-16 → 2027-03-23 (+7d) | 2027-04-03 → 2027-04-10 (+7d) |  | -32.48d → -38.48d |
| CON-LEG101-LR-2510 | Installation of Fire Hydrant [Local – 04 ] | 2027-04-03 → 2027-04-10 (+7d) | 2027-04-20 → 2027-04-27 (+7d) |  | -32.48d → -38.48d |
| 6 | **Public Water Utility Distribution** |  | 2027-04-05 → 2027-04-12 (+7d) |  |  |
| 2 | **Pipe Work** |  | 2027-01-10 → 2027-01-17 (+7d) |  |  |
| CON-LEG101-LR-10090 | Excavation for Public Water Utility Distribution Piping [Local – 04 ] |  | 2026-12-12 → 2026-12-19 (+7d) |  | -48.2d → -54.2d |
| CON-LEG101-LR-10190 | Granular bedding for Public Water Utility Distribution Piping [Local – 04 ] |  | 2026-12-13 → 2026-12-20 (+7d) |  | -48.2d → -54.2d |
| CON-LEG101-LR-10290 | Installation of Pipe for Public Water Utility Distribution Piping [Local – 04 ] |  | 2026-12-20 → 2026-12-27 (+7d) |  | -48.2d → -54.2d |
| CON-LEG101-LR-10590 | Granular Surround for Public Water Utility Distribution Piping [Local – 04 ] |  | 2027-01-02 → 2027-01-09 (+7d) |  | -48.2d → -54.2d |
| CON-LEG101-LR-10390 | Testing for Public Water Utility Distribution Piping [Local – 04 ] | 2026-12-20 → 2026-12-27 (+7d) | 2026-12-26 → 2027-01-02 (+7d) |  | -48.2d → -54.2d |
| CON-LEG101-LR-10490 | Concrete encasement, pipe dia 110 mm [Local – 04 ] | 2026-12-26 → 2027-01-02 (+7d) | 2026-12-29 → 2027-01-05 (+7d) |  | -48.2d → -54.2d |
| CON-LEG101-LR-10690 | Installation of Micron Marker Magnetic Tape [Local – 04 ] | 2027-01-02 → 2027-01-09 (+7d) | 2027-01-05 → 2027-01-12 (+7d) |  | -48.2d → -54.2d |
| CON-LEG101-LR-10790 | Backfilling to Subgrade Elevation [Local – 04 ] | 2027-01-05 → 2027-01-12 (+7d) | 2027-01-10 → 2027-01-17 (+7d) |  | -48.2d → -54.2d |
| 1 | **Valves/Chamber** | 2027-02-27 → 2027-03-06 (+7d) | 2027-04-05 → 2027-04-12 (+7d) |  |  |
| CON-LEG101-LR-1280 | Installation of Air Valve chambers [Local – 04 ] | 2027-02-27 → 2027-03-06 (+7d) | 2027-03-22 → 2027-03-29 (+7d) |  | 66.52d → 60.52d |
| CON-LEG101-LR-1050 | Installation of Gate (Sluice) valves (Direct buried) [Local – 04 ] | 2027-03-22 → 2027-03-29 (+7d) | 2027-03-29 → 2027-04-05 (+7d) |  | 66.52d → 60.52d |
| CON-LEG101-LR-1180 | Installation of Air Valves [Local – 04 ] | 2027-03-29 → 2027-04-05 (+7d) | 2027-04-05 → 2027-04-12 (+7d) |  | 66.52d → 60.52d |
| 8 | **Electrical Works** | 2027-05-20 → 2027-05-27 (+7d) | 2027-07-04 → 2027-07-11 (+7d) |  |  |
| 3 | **Low Voltage** | 2027-05-20 → 2027-05-27 (+7d) | 2027-07-04 → 2027-07-11 (+7d) |  |  |
| CON-LEG101-LR-7830 | Excavation works for Low Voltage Cables [Local – 04 ] | 2027-05-20 → 2027-05-27 (+7d) | 2027-06-03 → 2027-06-10 (+7d) |  | -151d → -157d |
| CON-LEG101-LR-8030 | Installation of Low Voltage Cables Duct Banks [Local – 04 ] | 2027-06-05 → 2027-06-12 (+7d) | 2027-06-15 → 2027-06-22 (+7d) |  | -151d → -157d |
| CON-LEG101-LR-7930 | Installation of Low Voltage Cables [Local – 04 ] | 2027-06-16 → 2027-06-23 (+7d) | 2027-06-30 → 2027-07-07 (+7d) |  | -90d → -96d |
| CON-LEG101-LR-8810 | Installation of Earthing System [Local – 04 ] | 2027-07-01 → 2027-07-08 (+7d) | 2027-07-04 → 2027-07-11 (+7d) |  | -35d → -41d |
| 10 | **Telecommunications** | 2027-06-16 → 2027-06-23 (+7d) | 2027-09-09 → 2027-09-16 (+7d) |  |  |
| CON-LEG101-LR-8880 | Installation of Sand and soil encased duct banks for primary network [Local – 04 ] | 2027-06-16 → 2027-06-23 (+7d) | 2027-07-05 → 2027-07-12 (+7d) |  | -151d → -157d |
| CON-LEG101-LR-8980 | Installation of Concrete encased duct banks for primary network [Local – 04 ] | 2027-07-06 → 2027-07-13 (+7d) | 2027-07-12 → 2027-07-19 (+7d) |  | -151d → -157d |
| CON-LEG101-LR-9080 | Installation of Sand encased duct banks for secondary network [Local – 04 ] | 2027-07-13 → 2027-07-20 (+7d) | 2027-07-20 → 2027-07-27 (+7d) |  | -151d → -157d |
| CON-LEG101-LR-9180 | Installation of Sand and soil encased duct banks, for combined network of primary and secondary [Local – 04 ] | 2027-07-21 → 2027-07-28 (+7d) | 2027-08-10 → 2027-08-17 (+7d) |  | -151d → -157d |
| CON-LEG101-LR-9280 | Installation of Concrete encased duct banks for for combined network of primary and secondary [Local – 04 ] | 2027-08-11 → 2027-08-18 (+7d) | 2027-08-16 → 2027-08-23 (+7d) |  | -151d → -157d |
| CON-LEG101-LR-9380 | Installation of Reinforced concrete manhole [Local – 04 ] | 2027-08-17 → 2027-08-24 (+7d) | 2027-09-09 → 2027-09-16 (+7d) |  | -151d → -157d |
| 11 | **CCTV feeding system and GSM** | 2027-07-06 → 2027-07-13 (+7d) | 2027-09-15 → 2027-09-22 (+7d) |  |  |
| CON-LEG101-LR-8600 | Excavation works for Low Voltage Cables for CCTV feeding system and GSM [Local – 04 ] | 2027-07-06 → 2027-07-13 (+7d) | 2027-07-19 → 2027-07-26 (+7d) |  | -36d → -42d |
| CON-LEG101-LR-8670 | Installation of Low Voltage Cables for CCTV feeding system and GSM [Local – 04 ] | 2027-07-20 → 2027-07-27 (+7d) | 2027-08-03 → 2027-08-10 (+7d) |  | -36d → -42d |
| CON-LEG101-LR-9490 | Installation of 8POE ports Industrial Switches for remote poles [Local – 04 ] | 2027-08-04 → 2027-08-11 (+7d) | 2027-08-11 → 2027-08-18 (+7d) |  | -36d → -42d |
| CON-LEG101-LR-9660 | Installation of IP Outdoor CCTV POE Camera,5 MP, Metal Housing [Local – 04 ] | 2027-08-12 → 2027-08-19 (+7d) | 2027-08-21 → 2027-08-28 (+7d) |  | -36d → -42d |
| CON-LEG101-LR-9740 | Installation of Outdoor PTZ IP66 [Local – 04 ] | 2027-08-22 → 2027-08-29 (+7d) | 2027-09-01 → 2027-09-08 (+7d) |  | -36d → -42d |
| CON-LEG101-LR-9990 | Installation of Short Range wireless point to point wireless bridge [Local – 04 ] | 2027-09-02 → 2027-09-09 (+7d) | 2027-09-15 → 2027-09-22 (+7d) |  | -36d → -42d |
| 12 | **Earthing System** | 2027-09-16 → 2027-09-25 (+9d) | 2027-09-26 → 2027-10-03 (+7d) |  |  |
| CON-LEG101-LR-15160 | Installation of Earthing for Distribution panels,SL feeder pillars, KWH, Unit substations and RMU [Local – 04 ] | 2027-09-16 → 2027-09-25 (+9d) | 2027-09-26 → 2027-10-03 (+7d) |  | -36d → -42d |
| 9 | **Road Lighting** | 2027-06-14 → 2027-06-17 (+3d) | 2027-08-19 → 2027-08-26 (+7d) |  |  |
| CON-LEG101-LR-8130 | Installation of Lighting poles [Local – 04 ] | 2027-06-14 → 2027-06-17 (+3d) | 2027-07-05 → 2027-07-08 (+3d) |  | -93.5d → -96.5d |
| CON-LEG101-LR-8230 | Installation of Street Lighting Luminaire [Local – 04 ] | 2027-07-05 → 2027-07-08 (+3d) | 2027-07-12 → 2027-07-15 (+3d) |  | -6.5d → -9.5d |
| CON-LEG101-LR-7450 | Installation of Unit Substation Including concrete foundations and fencing [Local – 04 ] | 2027-07-20 → 2027-07-27 (+7d) | 2027-07-27 → 2027-08-03 (+7d) |  | -13d → -19d |
| CON-LEG101-LR-7530 | Installation of Ring Main Unit RMU [Local – 04 ] | 2027-07-28 → 2027-08-04 (+7d) | 2027-08-12 → 2027-08-19 (+7d) |  | -13d → -19d |
| CON-LEG101-LR-8380 | Installation of Earthing for Streetlighting feeders for every end pole circuits. [Local – 04 ] | 2027-08-14 → 2027-08-21 (+7d) | 2027-08-19 → 2027-08-26 (+7d) |  | -13d → -19d |
| 5 | **Local – 05** |  | 2027-07-22 → 2027-07-26 (+4d) |  |  |
| 5 | **TSE Network** |  | 2026-11-21 → 2026-11-28 (+7d) |  |  |
| 1 | **Valves/Chamber** |  | 2026-11-21 → 2026-11-28 (+7d) |  |  |
| CON-LEG101-LR-2740 | Installation of Air Valve chambers [Local – 05 ] |  | 2026-11-21 → 2026-11-28 (+7d) |  | 177.84d → 171.84d |
| CON-LEG101-LR-2660 | Installation of Wash out chambers [Local – 05 ] |  | 2026-11-19 → 2026-11-26 (+7d) |  | 177.84d → 171.84d |
| 6 | **Public Water Utility Distribution** |  | 2026-11-22 → 2026-11-29 (+7d) |  |  |

| ID | Task | Start | Finish | Complete | Total float |
| --- | --- | --- | --- | --- | --- |
| 1 | **Valves/Chamber** |  | 2026-11-22 → 2026-11-29 (+7d) |  |  |
| CON-LEG101-LR-1240 | Installation of Wash out chambers [Local – 05 ] |  | 2026-11-22 → 2026-11-29 (+7d) |  | 218.84d → 212.84d |
| 1 | **Electrical Works** |  | 2027-05-26 → 2027-06-02 (+7d) |  |  |
| 3 | **Low Voltage** |  | 2027-05-26 → 2027-06-02 (+7d) |  |  |
| CON-LEG101-LR-8820 | Installation of Earthing System [Local – 05 ] | 2027-05-25 → 2027-06-01 (+7d) | 2027-05-26 → 2027-06-02 (+7d) |  | 25d → 19d |
| 10 | **Telecommunications** |  | 2027-06-07 → 2027-06-14 (+7d) |  |  |
| CON-LEG101-LR-9390 | Installation of Reinforced concrete manhole [Local – 05 ] |  | 2027-06-07 → 2027-06-14 (+7d) |  | 16.2d → 10.2d |
| CON-LEG101-LR-9090 | Installation of Sand encased duct banks for secondary network [Local – 05 ] |  | 2027-05-30 → 2027-06-06 (+7d) |  | 16.2d → 10.2d |
| CON-LEG101-LR-9190 | Installation of Sand and soil encased duct banks, for combined network of primary and secondary [Local – 05 ] |  | 2027-06-06 → 2027-06-13 (+7d) |  | 16.2d → 10.2d |
| 11 | **CCTV feeding system and GSM** |  | 2027-06-14 → 2027-06-21 (+7d) |  |  |
| CON-LEG101-LR-10000 | Installation of Short Range wireless point to point wireless bridge [Local – 05 ] |  | 2027-06-14 → 2027-06-21 (+7d) |  | 50d → 44d |
| CON-LEG101-LR-8610 | Excavation works for Low Voltage Cables for CCTV feeding system and GSM [Local – 05 ] |  | 2027-05-25 → 2027-06-01 (+7d) |  | 54.7d → 48.7d |
| CON-LEG101-LR-8680 | Installation of Low Voltage Cables for CCTV feeding system and GSM [Local – 05 ] |  | 2027-05-25 → 2027-06-01 (+7d) |  | 58.6d → 52.6d |
| CON-LEG101-LR-9440 | Installation of Fiber Optic Patch Panel 12 port [Local – 05 ] |  | 2027-05-26 → 2027-06-02 (+7d) |  | 58.6d → 52.6d |
| CON-LEG101-LR-9500 | Installation of 8POE ports Industrial Switches for remote poles [Local – 05 ] |  | 2027-05-26 → 2027-06-02 (+7d) |  | 58.6d → 52.6d |
| CON-LEG101-LR-9530 | Installation of Core Switch [Local – 05 ] |  | 2027-05-27 → 2027-06-03 (+7d) |  | 58.6d → 52.6d |
| CON-LEG101-LR-9550 | Installation of Access Switch 48 port [Local – 05 ] |  | 2027-05-27 → 2027-06-03 (+7d) |  | 58.6d → 52.6d |
| CON-LEG101-LR-9580 | Installation of Server [Local – 05 ] |  | 2027-05-29 → 2027-06-05 (+7d) |  | 58.6d → 52.6d |
| CON-LEG101-LR-9670 | Installation of IP Outdoor CCTV POE Camera,5 MP, Metal Housing [Local – 05 ] |  | 2027-06-12 → 2027-06-19 (+7d) |  | 50d → 44d |
| CON-LEG101-LR-9750 | Installation of Outdoor PTZ IP66 [Local – 05 ] |  | 2027-06-12 → 2027-06-19 (+7d) |  | 50d → 44d |
| CON-LEG101-LR-9860 | Installation of Horizontal Power Distribution Unit (min 8 outlets) [Local – 05 ] |  | 2027-06-14 → 2027-06-21 (+7d) |  | 50d → 44d |
| CON-LEG101-LR-9600 | Installation of Stand rack 42U- 19" [Local – 05 ] | 2027-06-07 → 2027-06-14 (+7d) | 2027-06-10 → 2027-06-17 (+7d) |  | 50d → 44d |
| CON-LEG101-LR-9810 | Installation of LED Screen 43" (24/7 operation) with Ethernet decoders [Local – 05 ] | 2027-06-12 → 2027-06-19 (+7d) | 2027-06-14 → 2027-06-21 (+7d) |  | 50d → 44d |
| 12 | **Earthing System** | 2027-07-19 → 2027-07-22 (+3d) | 2027-07-21 → 2027-07-25 (+4d) |  |  |
| CON-LEG101-LR-15150 | Installation of Earthing for Distribution panels,SL feeder pillars, KWH, Unit substations and RMU [Local – 05 ] | 2027-07-19 → 2027-07-22 (+3d) | 2027-07-21 → 2027-07-25 (+4d) |  | 20.6d → 17.6d |
| 9 | **Road Lighting** |  | 2027-07-22 → 2027-07-26 (+4d) |  |  |
| CON-LEG101-LR-7460 | Installation of Unit Substation Including concrete foundations and fencing [Local – 05 ] |  | 2027-07-11 → 2027-07-14 (+3d) |  | 19.6d → 16.6d |
| CON-LEG101-LR-8390 | Installation of Earthing for Streetlighting feeders for every end pole circuits. [Local – 05 ] |  | 2027-07-22 → 2027-07-26 (+4d) |  | 19.6d → 16.6d |
| CON-LEG101-LR-7540 | Installation of Ring Main Unit RMU [Local – 05 ] | 2027-07-11 → 2027-07-14 (+3d) | 2027-07-19 → 2027-07-22 (+3d) |  | 19.6d → 16.6d |
| 6 | **Local – 06** |  | 2027-07-17 → 2027-07-20 (+3d) |  |  |
| 10 | **Telecommunications** |  | 2027-05-26 → 2027-06-02 (+7d) |  |  |
| CON-LEG101-LR-9100 | Installation of Sand encased duct banks for secondary network [Local – 06 ] |  | 2027-05-25 → 2027-06-01 (+7d) |  | 46.05d → 40.05d |
| CON-LEG101-LR-9200 | Installation of Sand and soil encased duct banks, for combined network of primary and secondary [Local – 06 ] |  | 2027-05-26 → 2027-06-02 (+7d) |  | 46.05d → 40.05d |
| 11 | **CCTV feeding system and GSM** |  | 2027-05-26 → 2027-06-02 (+7d) |  |  |
| CON-LEG101-LR-10010 | Installation of Short Range wireless point to point wireless bridge [Local – 06 ] |  | 2027-05-26 → 2027-06-02 (+7d) |  | 65.2d → 59.2d |
| CON-LEG101-LR-9510 | Installation of 8POE ports Industrial Switches for remote poles [Local – 06 ] |  | 2027-05-25 → 2027-06-01 (+7d) |  | 59.5d → 53.5d |
| CON-LEG101-LR-9680 | Installation of IP Outdoor CCTV POE Camera,5 MP, Metal Housing [Local – 06 ] |  | 2027-05-26 → 2027-06-02 (+7d) |  | 65.2d → 59.2d |
| CON-LEG101-LR-9760 | Installation of Outdoor PTZ IP66 [Local – 06 ] |  | 2027-05-26 → 2027-06-02 (+7d) |  | 65.2d → 59.2d |
| 12 | **Earthing System** | 2027-07-13 → 2027-07-17 (+4d) | 2027-07-17 → 2027-07-20 (+3d) |  |  |
| CON-LEG101-LR-15140 | Installation of Earthing for Distribution panels,SL feeder pillars, KWH, Unit substations and RMU [Local – 06 ] | 2027-07-13 → 2027-07-17 (+4d) | 2027-07-17 → 2027-07-20 (+3d) |  | 24.7d → 21.7d |
| 9 | **Road Lighting** |  | 2027-07-15 → 2027-07-19 (+4d) |  |  |
| CON-LEG101-LR-7470 | Installation of Unit Substation Including concrete foundations and fencing [Local – 06 ] |  | 2027-07-08 → 2027-07-12 (+4d) |  | 24.7d → 21.7d |
| CON-LEG101-LR-8400 | Installation of Earthing for Streetlighting feeders for every end pole circuits. [Local – 06 ] |  | 2027-07-15 → 2027-07-19 (+4d) |  | 25.6d → 22.6d |
| CON-LEG101-LR-7550 | Installation of Ring Main Unit RMU [Local – 06 ] | 2027-07-08 → 2027-07-12 (+4d) | 2027-07-13 → 2027-07-17 (+4d) |  | 24.7d → 21.7d |
| 7 | **Local – 07** |  | 2027-07-18 → 2027-07-21 (+3d) |  |  |
| 11 | **CCTV feeding system and GSM** |  | 2027-05-25 → 2027-06-01 (+7d) |  |  |
| CON-LEG101-LR-10020 | Installation of Short Range wireless point to point wireless bridge [Local – 07 ] |  | 2027-05-25 → 2027-06-01 (+7d) |  | 58.1d → 52.1d |
| 12 | **Earthing System** | 2027-07-13 → 2027-07-17 (+4d) | 2027-07-18 → 2027-07-21 (+3d) |  |  |
| CON-LEG101-LR-15130 | Installation of Earthing for Distribution panels,SL feeder pillars, KWH, Unit substations and RMU [Local – 07 ] | 2027-07-13 → 2027-07-17 (+4d) | 2027-07-18 → 2027-07-21 (+3d) |  | 23.3d → 20.3d |
| 9 | **Road Lighting** |  | 2027-07-15 → 2027-07-19 (+4d) |  |  |
| CON-LEG101-LR-7480 | Installation of Unit Substation Including concrete foundations and fencing [Local – 07 ] |  | 2027-07-08 → 2027-07-12 (+4d) |  | 23.3d → 20.3d |
| CON-LEG101-LR-8410 | Installation of Earthing for Streetlighting feeders for every end pole circuits. [Local – 07 ] |  | 2027-07-15 → 2027-07-19 (+4d) |  | 25.3d → 22.3d |
| CON-LEG101-LR-7560 | Installation of Ring Main Unit RMU [Local – 07 ] | 2027-07-08 → 2027-07-12 (+4d) | 2027-07-13 → 2027-07-17 (+4d) |  | 23.3d → 20.3d |
| 8 | **Local – 08** |  | 2027-07-17 → 2027-07-20 (+3d) |  |  |
| 5 | **TSE Network** |  | 2026-11-21 → 2026-11-28 (+7d) |  |  |
| 1 | **Valves/Chamber** |  | 2026-11-21 → 2026-11-28 (+7d) |  |  |
| CON-LEG101-LR-2750 | Installation of Air Valve chambers [Local – 08 ] |  | 2026-11-21 → 2026-11-28 (+7d) |  | 205.6d → 201d |
| CON-LEG101-LR-2670 | Installation of Wash out chambers [Local – 08 ] |  | 2026-11-19 → 2026-11-26 (+7d) |  | 205.6d → 201d |
| 1 | **Electrical Works** |  | 2027-06-13 → 2027-06-20 (+7d) |  |  |
| 3 | **Low Voltage** |  | 2027-06-13 → 2027-06-20 (+7d) |  |  |
| CON-LEG101-LR-8500 | Installation of Low Voltage Distribution Panel [Local – 08 ] | 2027-06-06 → 2027-06-13 (+7d) | 2027-06-13 → 2027-06-20 (+7d) |  | 35.2d → 32.1d |
| 10 | **Telecommunications** |  | 2027-06-15 → 2026-10-15 (-243d) |  |  |
| CON-LEG101-LR-9420 | Installation of Reinforced concrete manhole [Local – 08 ] |  | 2027-06-15 → 2026-10-15 A (-243d) | 75% → 100% | 35.2d → none |
| 11 | **CCTV feeding system and GSM** |  | 2027-06-14 → 2027-06-21 (+7d) |  |  |
| CON-LEG101-LR-10030 | Installation of Short Range wireless point to point wireless bridge [Local – 08 ] |  | 2027-06-14 → 2027-06-21 (+7d) |  | 36d → 31.4d |
| CON-LEG101-LR-9770 | Installation of Outdoor PTZ IP66 [Local – 08 ] |  | 2027-01-18 → 2027-01-25 (+7d) |  | 145.7d → 141.1d |
| CON-LEG101-LR-9820 | Installation of LED Screen 43" (24/7 operation) with Ethernet decoders [Local – 08 ] | 2027-06-06 → 2027-06-13 (+7d) | 2027-06-13 → 2027-06-20 (+7d) |  | 36d → 31.4d |
| 12 | **Earthing System** | 2027-07-14 → 2027-07-18 (+4d) | 2027-07-17 → 2027-07-20 (+3d) |  |  |
| CON-LEG101-LR-8320 | Installation of Earthing for Distribution panels,SL feeder pillars, KWH, Unit substations and RMU [Local – 08 ] | 2027-07-14 → 2027-07-18 (+4d) | 2027-07-17 → 2027-07-20 (+3d) |  | 10.3d → 8.7d |
| 9 | **Road Lighting** |  | 2027-07-17 → 2027-07-20 (+3d) |  |  |

| ID | Task | Start | Finish | Complete | Total float |
| --- | --- | --- | --- | --- | --- |
| CON-LEG101-LR-8170 | Installation of Lighting poles [Local – 08 ] |  | 2027-07-06 → 2027-07-10 (+4d) |  | -61.2d → -64.2d |
| CON-LEG101-LR-7490 | Installation of Unit Substation Including concrete foundations and fencing [Local – 08 ] |  | 2027-07-08 → 2027-07-12 (+4d) |  | 10.3d → 8.7d |
| CON-LEG101-LR-8270 | Installation of Street Lighting Luminaire [Local – 08 ] |  | 2027-07-06 → 2027-07-10 (+4d) |  | 31.4d → 28.4d |
| CON-LEG101-LR-8470 | Installation of Street Lighting feeder pillars / Lighting panels [Local – 08 ] |  | 2027-07-14 → 2027-07-18 (+4d) |  | 10.3d → 8.7d |
| CON-LEG101-LR-7570 | Installation of Ring Main Unit RMU [Local – 08 ] | 2027-07-10 → 2027-07-13 (+3d) | 2027-07-13 → 2027-07-17 (+4d) |  | 10.3d → 8.7d |
| CON-LEG101-LR-8420 | Installation of Earthing for Streetlighting feeders for every end pole circuits. [Local – 08 ] | 2027-07-14 → 2027-07-18 (+4d) | 2027-07-17 → 2027-07-20 (+3d) |  | 24.6d → 21.6d |
| 3 | **Bridge** |  | 2027-08-22 → 2027-08-25 (+3d) |  |  |
| 3 | **Bridge Finishing** |  | 2027-08-22 → 2027-08-25 (+3d) |  |  |
| CON-LEG101-BR-1160 | Membrane waterproofing for concert in touch with soil and membrane waterproofing for bridge slab [Bridge ] | 2026-10-14 → 2026-10-21 (+7d) | 2026-10-25 → 2026-11-01 (+7d) |  | 117d → 111d |
| CON-LEG101-BR-1170 | Placing of Protective Coating for Concrete Surfaces [Bridge ] | 2026-10-26 → 2026-11-02 (+7d) | 2026-11-09 → 2026-11-16 (+7d) |  | 117d → 111d |
| CON-LEG101-BR-1260 | Asphalt Wearing Cource | 2026-11-10 → 2026-11-17 (+7d) | 2026-11-12 → 2026-11-19 (+7d) |  | 117d → 111d |
| CON-LEG101-BR-1190 | Installation of expansion joints for bridges [Bridge ] | 2026-11-14 → 2026-11-21 (+7d) | 2026-11-29 → 2026-12-06 (+7d) |  | 117d → 111d |
| CON-LEG101-BR-1200 | Installation of Guard Rail [Bridge ] | 2027-07-06 → 2027-07-10 (+4d) | 2027-07-29 → 2027-08-02 (+4d) |  | -61.2d → -64.2d |
| CON-LEG101-BR-1210 | Installation of GRP Panel [Bridge ] | 2027-07-29 → 2027-08-02 (+4d) | 2027-08-10 → 2027-08-14 (+4d) |  | -61.2d → -64.2d |
| CON-LEG101-BR-1220 | Installation of Logo MODON [Bridge ] | 2027-08-10 → 2027-08-14 (+4d) | 2027-08-22 → 2027-08-25 (+3d) |  | -61.2d → -64.2d |
| 4 | **Outside Boundary Area (Tie-in Lines)** |  | 2027-06-13 → 2027-06-20 (+7d) |  |  |
| 4 | **Sanitary Sewerage** |  | 2026-10-15 → 2026-10-22 (+7d) |  |  |
| 1 | **Manhole** |  | 2026-10-15 → 2026-10-22 (+7d) |  |  |
| CON-LEG101-OBA-1150 | Installation of Fiberglass Manholes [Outside Boundary Area ] |  | 2026-10-15 → 2026-10-22 (+7d) |  | 226.13d → 220.13d |
| 3 | **TSE Network** |  | 2027-06-13 → 2027-06-20 (+7d) |  |  |
| 1 | **Valves/Chamber** |  | 2027-06-13 → 2027-06-20 (+7d) |  |  |
| CON-LEG101-OBA-1070 | Installation of Butterfly valves (In Chamber) [Outside Boundary Area ] |  | 2027-06-13 → 2027-06-20 (+7d) |  | 29.18d → 23.18d |
| CON-LEG101-OBA-1500 | Installation of Valve Chamber [Outside Boundary Area ] |  | 2027-06-13 → 2027-06-20 (+7d) |  | 29.18d → 23.18d |
| 5 | **Public Water Utility Distribution** |  | 2026-10-17 → 2026-10-24 (+7d) |  |  |
| 3 | **Public Water Utility Distribution (0 - 900) m** |  | 2026-10-15 → 2026-10-22 (+7d) |  |  |
| 1 | **Valves/Chamber** |  | 2026-10-15 → 2026-10-22 (+7d) |  |  |
| CON-LEG101-OBA-1420 | Installation of Air Valve chambers [Outside Boundary Area ] 0 - 900 m |  | 2026-10-15 → 2026-10-22 (+7d) |  | 225.21d → 219.21d |
| CON-LEG101-OBA-1430 | Installation of Air Valves [Outside Boundary Area ] 0 - 900 m |  | 2026-10-15 → 2026-10-22 (+7d) |  | 225.21d → 219.21d |
| 1 | **Public Water Utility Distribution (901 - 1800) m** |  | 2026-10-17 → 2026-10-24 (+7d) |  |  |
| 1 | **Valves/Chamber** |  | 2026-10-17 → 2026-10-24 (+7d) |  |  |
| CON-LEG101-OBA-1440 | Installation of Air Valve chambers [Outside Boundary Area ] 901 - 1800 m |  | 2026-10-15 → 2026-10-22 (+7d) |  | 225.21d → 219.21d |
| CON-LEG101-OBA-1450 | Installation of Air Valves [Outside Boundary Area ] 901 - 1800 m |  | 2026-10-17 → 2026-10-24 (+7d) |  | 225.21d → 219.21d |
| CON-LEG101-OBA-1510 | Installation of Butterfly valves, on pipe with diameter 400 mm |  | 2026-10-17 → 2026-10-24 (+7d) |  | 225.21d → 219.21d |
| 8 | **Roads Finishing** |  | 2027-12-01 → 2027-12-08 (+7d) |  |  |
| 1 | **Local – 01** |  | 2027-11-03 → 2027-11-09 (+6d) |  |  |
| 1 | **LOCAL - 01 Segment-01 (From 0+000 to 1+066)** |  | 2027-10-05 → 2027-10-12 (+7d) |  |  |
| 7 | **Concrete Curb** |  | 2027-07-22 → 2027-07-29 (+7d) |  |  |
| CON-LEG101-LR-6180 | Installation of Precast Concrete Curb [Local – 01 Segment-01] |  | 2027-07-22 → 2027-07-29 (+7d) |  | -100.45d → -106.45d |
| 1 | **Asphalt Wearing Course** |  | 2027-07-31 → 2027-08-07 (+7d) |  |  |
| CON-LEG101-LR-5980 | Tack coat (RC2) [Local – 01 Segment-01] |  | 2027-07-26 → 2027-08-02 (+7d) |  | -48.75d → -53.7d |
| CON-LEG101-LR-6080 | Bituminous wearing course [Local – 01 Segment-01] |  | 2027-07-31 → 2027-08-07 (+7d) |  | -48.75d → -53.7d |
| 4 | **Interlocking block sidewalk/footpath** |  | 2027-10-05 → 2027-10-12 (+7d) |  |  |
| CON-LEG101-LR-6280 | Interlocking block pavers for sidewalk/footpath [Local – 01 Segment-01] |  | 2027-10-05 → 2027-10-12 (+7d) |  | -36d → -42d |
| 5 | **Pavement Markings** | 2027-08-14 → 2027-08-21 (+7d) | 2027-09-01 → 2027-09-08 (+7d) |  |  |
| CON-LEG101-LR-6580 | Pavement Markings (White Paint/Yellow Paint) [Local – 01 Segment-01] | 2027-08-14 → 2027-08-21 (+7d) | 2027-08-21 → 2027-08-28 (+7d) |  | -61.15d → -66.1d |
| CON-LEG101-LR-6680 | Handicap ramp [Local – 01 Segment-01] | 2027-08-21 → 2027-08-28 (+7d) | 2027-09-01 → 2027-09-08 (+7d) |  | -56.15d → -61.1d |
| 6 | **Traffic Signs** |  | 2027-09-21 → 2027-09-29 (+8d) |  |  |
| CON-LEG101-LR-6780 | Installation of Traffic Signs [Local – 01 Segment-01] |  | 2027-09-21 → 2027-09-29 (+8d) |  | -36d → -40.95d |
| CON-LEG101-LR-6480 | Retroreflective Plastic Cones [Local – 01 Segment-01] | 2027-09-01 → 2027-09-08 (+7d) | 2027-09-12 → 2027-09-19 (+7d) |  | -55.15d → -60.1d |
| 2 | **LOCAL - 01 Segment-02 (From 1+066 to 2+133)** |  | 2027-10-10 → 2027-10-17 (+7d) |  |  |
| 1 | **Asphalt Wearing Course** |  | 2027-08-03 → 2027-08-10 (+7d) |  |  |
| CON-LEG101-LR-5990 | Tack coat (RC2) [Local – 01 Segment-02] |  | 2027-08-01 → 2027-08-08 (+7d) |  | -45.55d → -51.55d |
| CON-LEG101-LR-6090 | Bituminous wearing course [Local – 01 Segment-02] |  | 2027-08-03 → 2027-08-10 (+7d) |  | -45.55d → -51.55d |
| 5 | **Pavement Markings** | 2027-08-21 → 2027-08-28 (+7d) | 2027-09-19 → 2027-09-27 (+8d) |  |  |
| CON-LEG101-LR-6590 | Pavement Markings (White Paint/Yellow Paint) [Local – 01 Segment-02] | 2027-08-21 → 2027-08-28 (+7d) | 2027-09-07 → 2027-09-14 (+7d) |  | -61.15d → -66.1d |
| CON-LEG101-LR-6690 | Handicap ramp [Local – 01 Segment-02] | 2027-09-07 → 2027-09-14 (+7d) | 2027-09-19 → 2027-09-27 (+8d) |  | -61.15d → -66.1d |
| 6 | **Traffic Signs** |  | 2027-10-10 → 2027-10-17 (+7d) |  |  |
| CON-LEG101-LR-6790 | Installation of Traffic Signs [Local – 01 Segment-02] |  | 2027-10-10 → 2027-10-17 (+7d) |  | -46.4d → -51.35d |
| CON-LEG101-LR-6490 | Retroreflective Plastic Cones [Local – 01 Segment-02] | 2027-09-19 → 2027-09-27 (+8d) | 2027-10-04 → 2027-10-11 (+7d) |  | -61.15d → -66.1d |
| 3 | **LOCAL - 01 Segment-03 (From 2+133 to 3+200)** |  | 2027-11-03 → 2027-11-09 (+6d) |  |  |
| 1 | **Asphalt Wearing Course** | 2027-08-03 → 2027-08-10 (+7d) | 2027-08-12 → 2027-08-19 (+7d) |  |  |
| CON-LEG101-LR-6000 | Tack coat (RC2) [Local – 01 Segment-03] | 2027-08-03 → 2027-08-10 (+7d) | 2027-08-08 → 2027-08-15 (+7d) |  | -45.55d → -51.55d |
| CON-LEG101-LR-6100 | Bituminous wearing course [Local – 01 Segment-03] | 2027-08-08 → 2027-08-15 (+7d) | 2027-08-12 → 2027-08-19 (+7d) |  | -45.55d → -51.55d |
| 5 | **Pavement Markings** | 2027-09-07 → 2027-09-14 (+7d) | 2027-10-04 → 2027-10-11 (+7d) |  |  |
| CON-LEG101-LR-6600 | Pavement Markings (White Paint/Yellow Paint) [Local – 01 Segment-03] | 2027-09-07 → 2027-09-14 (+7d) | 2027-09-19 → 2027-09-27 (+8d) |  | -61.15d → -66.1d |
| CON-LEG101-LR-6700 | Handicap ramp [Local – 01 Segment-03] | 2027-09-19 → 2027-09-27 (+8d) | 2027-10-04 → 2027-10-11 (+7d) |  | -61.15d → -66.1d |
| 6 | **Traffic Signs** |  | 2027-11-03 → 2027-11-09 (+6d) |  |  |
| CON-LEG101-LR-6800 | Installation of Traffic Signs [Local – 01 Segment-03] |  | 2027-11-03 → 2027-11-09 (+6d) | 70% → 75% | -61.15d → -66.1d |
| CON-LEG101-LR-6500 | Retroreflective Plastic Cones [Local – 01 Segment-03] | 2027-10-04 → 2027-10-11 (+7d) | 2027-10-27 → 2027-11-03 (+7d) |  | -61.15d → -66.1d |
| 2 | **Local – 02** |  | 2027-10-31 → 2027-11-07 (+7d) |  |  |

| ID | Task | Start | Finish | Complete | Total float |
| --- | --- | --- | --- | --- | --- |
| 1 | **Asphalt Wearing Course** |  | 2027-08-14 → 2027-08-21 (+7d) |  |  |
| CON-LEG101-LR-6010 | Tack coat (RC2) [Local – 02 ] |  | 2027-08-12 → 2027-08-19 (+7d) |  | -45.55d → -51.55d |
| CON-LEG101-LR-6110 | Bituminous wearing course [Local – 02 ] |  | 2027-08-14 → 2027-08-21 (+7d) |  | -45.55d → -51.55d |
| 5 | **Pavement Markings** | 2027-09-19 → 2027-09-27 (+8d) | 2027-10-13 → 2027-10-20 (+7d) |  |  |
| CON-LEG101-LR-6610 | Pavement Markings (White Paint/Yellow Paint) [Local – 02 ] | 2027-09-19 → 2027-09-27 (+8d) | 2027-10-02 → 2027-10-09 (+7d) |  | -58.1d → -64.1d |
| CON-LEG101-LR-6710 | Handicap ramp [Local – 02 ] | 2027-10-02 → 2027-10-09 (+7d) | 2027-10-13 → 2027-10-20 (+7d) |  | -58.1d → -64.1d |
| 6 | **Traffic Signs** |  | 2027-10-31 → 2027-11-07 (+7d) |  |  |
| CON-LEG101-LR-6810 | Installation of Traffic Signs [Local – 02 ] |  | 2027-10-31 → 2027-11-07 (+7d) |  | -58.1d → -64.1d |
| CON-LEG101-LR-6510 | Retroreflective Plastic Cones [Local – 02 ] | 2027-10-13 → 2027-10-20 (+7d) | 2027-10-25 → 2027-11-01 (+7d) |  | -58.1d → -64.1d |
| 3 | **Local – 03** |  | 2027-10-12 → 2027-10-18 (+6d) |  |  |
| 7 | **Concrete Curb** |  | 2027-08-15 → 2027-07-26 (-20d) |  |  |
| CON-LEG101-LR-6220 | Installation of Precast Concrete Curb [Local – 03 ] |  | 2027-08-15 → 2027-07-26 (-20d) | 50% → 75% | -128.95d → -111.55d |
| 1 | **Asphalt Wearing Course** | 2027-08-15 → 2027-08-21 (+6d) | 2027-08-21 → 2027-08-26 (+5d) |  |  |
| CON-LEG101-LR-6020 | Tack coat (RC2) [Local – 03 ] | 2027-08-15 → 2027-08-21 (+6d) | 2027-08-17 → 2027-08-23 (+6d) |  | -47.35d → -51.55d |
| CON-LEG101-LR-6120 | Bituminous wearing course [Local – 03 ] | 2027-08-17 → 2027-08-23 (+6d) | 2027-08-21 → 2027-08-26 (+5d) |  | -47.35d → -51.55d |
| 3 | **Interlocking block roads/on-street parking** | 2027-08-21 → 2027-08-26 (+5d) | 2027-09-14 → 2027-09-20 (+6d) |  |  |
| CON-LEG101-LR-6420 | Interlocking block pavers for roads/on-street parking [Local – 03 ] | 2027-08-21 → 2027-08-26 (+5d) | 2027-09-14 → 2027-09-20 (+6d) |  | -40.35d → -42.45d |
| 4 | **Interlocking block sidewalk/footpath** | 2027-09-14 → 2026-10-19 (-330d) | 2027-10-10 → 2027-10-13 (+3d) |  |  |
| CON-LEG101-LR-6320 | Interlocking block pavers for sidewalk/footpath [Local – 03 ] | 2027-09-14 → 2026-10-19 A (-330d) | 2027-10-10 → 2027-10-13 (+3d) | 0% → 10% | -40.35d → -42.45d |
| 5 | **Pavement Markings** | 2027-08-21 → 2027-08-26 (+5d) | 2027-09-13 → 2027-09-19 (+6d) |  |  |
| CON-LEG101-LR-6620 | Pavement Markings (White Paint/Yellow Paint) [Local – 03 ] | 2027-08-21 → 2027-08-26 (+5d) | 2027-09-01 → 2027-09-07 (+6d) |  | -42.35d → -46.55d |
| CON-LEG101-LR-6720 | Handicap ramp [Local – 03 ] | 2027-09-01 → 2027-09-07 (+6d) | 2027-09-13 → 2027-09-19 (+6d) |  | -42.35d → -46.55d |
| 6 | **Traffic Signs** |  | 2027-10-12 → 2027-10-18 (+6d) |  |  |
| CON-LEG101-LR-6820 | Installation of Traffic Signs [Local – 03 ] |  | 2027-10-12 → 2027-10-18 (+6d) |  | -42.35d → -46.55d |
| CON-LEG101-LR-6520 | Retroreflective Plastic Cones [Local – 03 ] | 2027-09-13 → 2027-09-19 (+6d) | 2027-09-26 → 2027-10-02 (+6d) |  | -42.35d → -46.55d |
| 4 | **Local – 04** | 2027-09-11 → 2027-09-18 (+7d) | 2027-12-01 → 2027-12-08 (+7d) |  |  |
| 7 | **Concrete Curb** | 2027-09-11 → 2027-09-18 (+7d) | 2027-10-05 → 2027-10-12 (+7d) |  |  |
| CON-LEG101-LR-6230 | Installation of Precast Concrete Curb [Local – 04 ] | 2027-09-11 → 2027-09-18 (+7d) | 2027-10-05 → 2027-10-12 (+7d) |  | -151d → -157d |
| 1 | **Asphalt Wearing Course** | 2027-10-06 → 2027-10-13 (+7d) | 2027-10-11 → 2027-10-18 (+7d) |  |  |
| CON-LEG101-LR-6030 | Tack coat (RC2) [Local – 04 ] | 2027-10-06 → 2027-10-13 (+7d) | 2027-10-07 → 2027-10-14 (+7d) |  | -85.4d → -91.4d |
| CON-LEG101-LR-6130 | Bituminous wearing course [Local – 04 ] | 2027-10-09 → 2027-10-16 (+7d) | 2027-10-11 → 2027-10-18 (+7d) |  | -85.4d → -91.4d |
| 3 | **Interlocking block roads/on-street parking** | 2027-10-12 → 2027-10-19 (+7d) | 2027-11-02 → 2027-11-09 (+7d) |  |  |
| CON-LEG101-LR-6430 | Interlocking block pavers for roads/on-street parking [Local – 04 ] | 2027-10-12 → 2027-10-19 (+7d) | 2027-11-02 → 2027-11-09 (+7d) |  | -79.4d → -85.4d |
| 4 | **Interlocking block sidewalk/footpath** | 2027-11-03 → 2027-11-10 (+7d) | 2027-11-24 → 2027-12-01 (+7d) |  |  |
| CON-LEG101-LR-6330 | Interlocking block pavers for sidewalk/footpath [Local – 04 ] | 2027-11-03 → 2027-11-10 (+7d) | 2027-11-24 → 2027-12-01 (+7d) |  | -79.4d → -85.4d |
| 5 | **Pavement Markings** | 2027-10-12 → 2027-10-19 (+7d) | 2027-11-03 → 2027-11-10 (+7d) |  |  |
| CON-LEG101-LR-6630 | Pavement Markings (White Paint/Yellow Paint) [Local – 04 ] | 2027-10-12 → 2027-10-19 (+7d) | 2027-10-23 → 2027-10-30 (+7d) |  | -85.4d → -91.4d |
| CON-LEG101-LR-6730 | Handicap ramp [Local – 04 ] | 2027-10-24 → 2027-10-31 (+7d) | 2027-11-03 → 2027-11-10 (+7d) |  | -85.4d → -91.4d |
| 6 | **Traffic Signs** | 2027-11-04 → 2027-11-11 (+7d) | 2027-12-01 → 2027-12-08 (+7d) |  |  |
| CON-LEG101-LR-6530 | Retroreflective Plastic Cones [Local – 04 ] | 2027-11-04 → 2027-11-11 (+7d) | 2027-11-15 → 2027-11-22 (+7d) |  | -85.4d → -91.4d |
| CON-LEG101-LR-6830 | Installation of Traffic Signs [Local – 04 ] | 2027-11-16 → 2027-11-23 (+7d) | 2027-12-01 → 2027-12-08 (+7d) |  | -85.4d → -91.4d |
| 5 | **Local – 05** |  | 2027-11-14 → 2027-11-21 (+7d) |  |  |
| 1 | **Asphalt Wearing Course** |  | 2027-10-12 → 2027-10-19 (+7d) |  |  |
| CON-LEG101-LR-6040 | Tack coat (RC2) [Local – 05 ] |  | 2027-10-12 → 2027-10-19 (+7d) |  | -71.9d → -77.9d |
| CON-LEG101-LR-6140 | Bituminous wearing course [Local – 05 ] |  | 2027-10-12 → 2027-10-19 (+7d) |  | -71.9d → -77.9d |
| 5 | **Pavement Markings** | 2027-10-12 → 2027-10-19 (+7d) | 2027-11-04 → 2027-11-11 (+7d) |  |  |
| CON-LEG101-LR-6640 | Pavement Markings (White Paint/Yellow Paint) [Local – 05 ] | 2027-10-12 → 2027-10-19 (+7d) | 2027-10-24 → 2027-10-31 (+7d) |  | -69.9d → -75.9d |
| CON-LEG101-LR-6740 | Handicap ramp [Local – 05 ] | 2027-10-24 → 2027-10-31 (+7d) | 2027-11-04 → 2027-11-11 (+7d) |  | -69.9d → -75.9d |
| 6 | **Traffic Signs** |  | 2027-11-14 → 2027-11-21 (+7d) |  |  |
| CON-LEG101-LR-6840 | Installation of Traffic Signs [Local – 05 ] |  | 2027-11-14 → 2027-11-21 (+7d) |  | -69.9d → -75.9d |
| CON-LEG101-LR-6540 | Retroreflective Plastic Cones [Local – 05 ] | 2027-11-04 → 2027-11-11 (+7d) | 2027-11-10 → 2027-11-17 (+7d) |  | -69.9d → -75.9d |
| 6 | **Local – 06** |  | 2027-11-16 → 2027-11-23 (+7d) |  |  |
| 1 | **Asphalt Wearing Course** |  | 2027-10-14 → 2027-10-21 (+7d) |  |  |
| CON-LEG101-LR-6050 | Tack coat (RC2) [Local – 06 ] |  | 2027-10-13 → 2027-10-20 (+7d) |  | -71.9d → -77.9d |
| CON-LEG101-LR-6150 | Bituminous wearing course [Local – 06 ] |  | 2027-10-14 → 2027-10-21 (+7d) |  | -71.9d → -77.9d |
| 5 | **Pavement Markings** | 2027-10-14 → 2027-10-21 (+7d) | 2027-11-07 → 2027-11-14 (+7d) |  |  |
| CON-LEG101-LR-6650 | Pavement Markings (White Paint/Yellow Paint) [Local – 06 ] | 2027-10-14 → 2027-10-21 (+7d) | 2027-10-26 → 2027-11-02 (+7d) |  | -71.9d → -77.9d |
| CON-LEG101-LR-6750 | Handicap ramp [Local – 06 ] | 2027-10-26 → 2027-11-02 (+7d) | 2027-11-07 → 2027-11-14 (+7d) |  | -71.9d → -77.9d |
| 6 | **Traffic Signs** |  | 2027-11-16 → 2027-11-23 (+7d) |  |  |
| CON-LEG101-LR-6850 | Installation of Traffic Signs [Local – 06 ] |  | 2027-11-16 → 2027-11-23 (+7d) |  | -71.9d → -77.9d |
| CON-LEG101-LR-6550 | Retroreflective Plastic Cones [Local – 06 ] | 2027-11-07 → 2027-11-14 (+7d) | 2027-11-11 → 2027-11-18 (+7d) |  | -71.9d → -77.9d |
| 7 | **Local – 07** |  | 2027-10-25 → 2027-11-01 (+7d) |  |  |
| 1 | **Asphalt Wearing Course** |  | 2027-10-07 → 2027-10-14 (+7d) |  |  |
| CON-LEG101-LR-6060 | Tack coat (RC2) [Local – 07 ] |  | 2027-10-06 → 2027-10-13 (+7d) |  | -53.1d → -59.1d |
| CON-LEG101-LR-6160 | Bituminous wearing course [Local – 07 ] |  | 2027-10-07 → 2027-10-14 (+7d) |  | -53.1d → -59.1d |
| 5 | **Pavement Markings** | 2027-10-07 → 2027-10-14 (+7d) | 2027-10-17 → 2027-10-24 (+7d) |  |  |
| CON-LEG101-LR-6660 | Pavement Markings (White Paint/Yellow Paint) [Local – 07 ] | 2027-10-07 → 2027-10-14 (+7d) | 2027-10-12 → 2027-10-19 (+7d) |  | -53.1d → -59.1d |
| CON-LEG101-LR-6760 | Handicap ramp [Local – 07 ] | 2027-10-12 → 2027-10-19 (+7d) | 2027-10-17 → 2027-10-24 (+7d) |  | -53.1d → -59.1d |
| 6 | **Traffic Signs** |  | 2027-10-25 → 2027-11-01 (+7d) |  |  |
| CON-LEG101-LR-6860 | Installation of Traffic Signs [Local – 07 ] |  | 2027-10-25 → 2027-11-01 (+7d) |  | -53.1d → -59.1d |

| ID | Task | Start | Finish | Complete | Total float |
| --- | --- | --- | --- | --- | --- |
| CON-LEG101-LR-6560 | Retroreflective Plastic Cones [Local – 07 ] | 2027-10-17 → 2027-10-24 (+7d) | 2027-10-21 → 2027-10-28 (+7d) |  | -53.1d → -59.1d |
| 8 | **Local – 08** |  | 2027-10-31 → 2027-11-06 (+6d) |  |  |
| 1 | **Asphalt Wearing Course** | 2027-10-06 → 2027-10-13 (+7d) | 2027-10-11 → 2027-10-18 (+7d) |  |  |
| CON-LEG101-LR-6070 | Tack coat (RC2) [Local – 08 ] | 2027-10-06 → 2027-10-13 (+7d) | 2027-10-07 → 2027-10-14 (+7d) |  | -58.3d → -62.9d |
| CON-LEG101-LR-6170 | Bituminous wearing course [Local – 08 ] | 2027-10-09 → 2027-10-16 (+7d) | 2027-10-11 → 2027-10-18 (+7d) |  | -58.3d → -62.9d |
| 5 | **Pavement Markings** | 2027-10-12 → 2027-10-19 (+7d) | 2027-10-20 → 2027-10-27 (+7d) |  |  |
| CON-LEG101-LR-6670 | Pavement Markings (White Paint/Yellow Paint) [Local – 08 ] | 2027-10-12 → 2027-10-19 (+7d) | 2027-10-16 → 2027-10-23 (+7d) |  | -58.3d → -62.9d |
| CON-LEG101-LR-6770 | Handicap ramp [Local – 08 ] | 2027-10-17 → 2027-10-24 (+7d) | 2027-10-20 → 2027-10-27 (+7d) |  | -58.3d → -62.9d |
| 6 | **Traffic Signs** |  | 2027-10-31 → 2027-11-06 (+6d) |  |  |
| CON-LEG101-LR-6870 | Installation of Traffic Signs [Local – 08 ] |  | 2027-10-31 → 2027-11-06 (+6d) | 65% → 75% | -58.3d → -62.9d |
| CON-LEG101-LR-6570 | Retroreflective Plastic Cones [Local – 08 ] | 2027-10-21 → 2027-10-28 (+7d) | 2027-10-25 → 2027-11-01 (+7d) |  | -58.3d → -62.9d |
| 5 | **Fence and Gate** |  | 2027-11-27 → 2027-11-30 (+3d) |  |  |
| 1 | **Fence and Gate Segment -01 (From 0+000 to 0+671)** |  | 2027-02-07 → 2027-02-18 (+11d) |  |  |
| 1 | **Fence** |  | 2027-02-07 → 2027-02-18 (+11d) |  |  |
| CON-LEG101-FG-1000 | Excavation for Fences [Fence and Gate Segment -01] |  | 2026-10-18 → 2026-10-25 (+7d) |  | 29.68d → 23.68d |
| CON-LEG101-FG-1100 | Lean concrete for Foundation [Fence and Gate Segment -01] |  | 2026-10-22 → 2026-10-29 (+7d) |  | 29.68d → 23.68d |
| CON-LEG101-FG-1150 | Reinforced concrete Structure [Fence and Gate Segment -01] |  | 2026-11-12 → 2026-11-19 (+7d) |  | 29.68d → 23.68d |
| CON-LEG101-FG-1200 | Spraying of bituminous paint waterproofing for R.C foundation [Fence and Gate Segment -01] | 2026-11-12 → 2026-11-19 (+7d) | 2026-11-24 → 2026-12-01 (+7d) |  | 29.68d → 23.68d |
| CON-LEG101-FG-1260 | Embankments to the Fences [Fence and Gate Segment -01] | 2026-11-24 → 2026-12-01 (+7d) | 2026-12-03 → 2026-12-10 (+7d) |  | 29.68d → 23.68d |
| CON-LEG101-FG-1050 | Concrete Works for Ground Beam for Fences [Fence and Gate Segment -01] | 2026-12-03 → 2026-12-10 (+7d) | 2026-12-27 → 2027-01-03 (+7d) |  | 29.68d → 23.68d |
| CON-LEG101-FG-1420 | Plster Works for Fences [Fence and Gate Segment -01] | 2026-12-27 → 2027-01-03 (+7d) | 2027-01-10 → 2027-01-17 (+7d) |  | 29.68d → 23.68d |
| CON-LEG101-FG-1280 | Installation of Metal Fence [Fence and Gate Segment -01] | 2027-01-10 → 2027-01-17 (+7d) | 2027-01-26 → 2027-02-02 (+7d) |  | 29.68d → 23.68d |
| CON-LEG101-FG-1340 | Paint On Cement Plaster [Fence and Gate Segment -01] | 2027-01-26 → 2027-02-02 (+7d) | 2027-02-07 → 2027-02-18 (+11d) |  | 29.68d → 23.68d |
| 2 | **Fence and Gate Segment -02 (From 0+671 to 1+342)** |  | 2027-04-13 → 2027-04-20 (+7d) |  |  |
| 1 | **Fence** |  | 2027-04-13 → 2027-04-20 (+7d) |  |  |
| CON-LEG101-FG-1010 | Excavation for Fences [Fence and Gate Segment -02] |  | 2027-02-15 → 2027-02-23 (+8d) |  | 29.68d → 23.68d |
| CON-LEG101-FG-1110 | Lean concrete for Foundation [Fence and Gate Segment -02] |  | 2027-02-16 → 2027-02-24 (+8d) |  | 29.68d → 23.68d |
| CON-LEG101-FG-1160 | Reinforced concrete Structure [Fence and Gate Segment -02] |  | 2027-02-23 → 2027-03-02 (+7d) |  | 29.68d → 23.68d |
| CON-LEG101-FG-1210 | Spraying of bituminous paint waterproofing for R.C foundation [Fence and Gate Segment -02] |  | 2027-02-25 → 2027-03-04 (+7d) |  | 29.68d → 23.68d |
| CON-LEG101-FG-1330 | Embankments to the Fences [Fence and Gate Segment -02] |  | 2027-02-28 → 2027-03-07 (+7d) |  | 29.68d → 23.68d |
| CON-LEG101-FG-1060 | Concrete Works for Ground Beam for Fences [Fence and Gate Segment -02] |  | 2027-03-06 → 2027-03-13 (+7d) |  | 29.68d → 23.68d |
| CON-LEG101-FG-1290 | Installation of Metal Fence [Fence and Gate Segment -02] |  | 2027-03-30 → 2027-04-06 (+7d) |  | 29.68d → 23.68d |
| CON-LEG101-FG-1430 | Plster Works for Fences [Fence and Gate Segment -02] | 2027-03-06 → 2027-03-13 (+7d) | 2027-03-20 → 2027-03-27 (+7d) |  | 29.68d → 23.68d |
| CON-LEG101-FG-1350 | Paint On Cement Plaster [Fence and Gate Segment -02] | 2027-03-30 → 2027-04-06 (+7d) | 2027-04-13 → 2027-04-20 (+7d) |  | 29.68d → 23.68d |
| 3 | **Fence and Gate Segment -03 (From 1+342 to 2+014)** |  | 2027-06-12 → 2027-06-19 (+7d) |  |  |
| 1 | **Fence** |  | 2027-05-01 → 2027-05-08 (+7d) |  |  |
| CON-LEG101-FG-1300 | Installation of Metal Fence [Fence and Gate Segment -03] |  | 2027-04-21 → 2027-04-28 (+7d) |  | 29.68d → 23.68d |
| CON-LEG101-FG-1440 | Plster Works for Fences [Fence and Gate Segment -03] |  | 2027-04-21 → 2027-04-28 (+7d) |  | 29.68d → 23.68d |
| CON-LEG101-FG-1360 | Paint On Cement Plaster [Fence and Gate Segment -03] |  | 2027-05-01 → 2027-05-08 (+7d) |  | 62.48d → 56.48d |
| 2 | **Gate** | 2027-04-21 → 2027-04-28 (+7d) | 2027-06-12 → 2027-06-19 (+7d) |  |  |
| CON-LEG101-FG-1250 | Installation of Main Entrance Motorized Gate [Fence and Gate Segment -03] | 2027-04-21 → 2027-04-28 (+7d) | 2027-05-19 → 2027-05-26 (+7d) |  | 29.68d → 23.68d |
| CON-LEG101-FG-1270 | Installation of Pedestrain Gate [Fence and Gate Segment -03] | 2027-05-19 → 2027-05-26 (+7d) | 2027-06-12 → 2027-06-19 (+7d) |  | 29.68d → 23.68d |
| 4 | **Fence and Gate Segment -04 (From 2+014 to 2+685)** |  | 2027-08-22 → 2027-08-25 (+3d) |  |  |
| 1 | **Fence** |  | 2027-08-22 → 2027-08-25 (+3d) |  |  |
| CON-LEG101-FG-1370 | Paint On Cement Plaster [Fence and Gate Segment -04] |  | 2027-08-22 → 2027-08-25 (+3d) |  | -30.2d → -33.2d |
| CON-LEG101-FG-1450 | Plster Works for Fences [Fence and Gate Segment -04] |  | 2027-06-13 → 2027-06-20 (+7d) |  | 29.18d → 23.18d |
| 5 | **Fence and Gate Segment -05 (From 2+685 to 3+356)** | 2027-08-22 → 2027-08-25 (+3d) | 2027-11-27 → 2027-11-30 (+3d) |  |  |
| 1 | **Fence** | 2027-08-22 → 2027-08-25 (+3d) | 2027-11-27 → 2027-11-30 (+3d) |  |  |
| CON-LEG101-FG-1040 | Excavation for Fences [Fence and Gate Segment -05] | 2027-08-22 → 2027-08-25 (+3d) | 2027-09-02 → 2027-09-06 (+4d) |  | -30.2d → -33.2d |
| CON-LEG101-FG-1140 | Lean concrete for Foundation [Fence and Gate Segment -05] | 2027-09-02 → 2027-09-06 (+4d) | 2027-09-07 → 2027-09-11 (+4d) |  | -30.2d → -33.2d |
| CON-LEG101-FG-1190 | Reinforced concrete Structure [Fence and Gate Segment -05] | 2027-09-07 → 2027-09-11 (+4d) | 2027-10-02 → 2027-10-05 (+3d) |  | -30.2d → -33.2d |
| CON-LEG101-FG-1240 | Spraying of bituminous paint waterproofing for R.C foundation [Fence and Gate Segment -05] | 2027-10-02 → 2027-10-05 (+3d) | 2027-10-13 → 2027-10-17 (+4d) |  | -30.2d → -33.2d |
| CON-LEG101-FG-1410 | Embankments to the Fences [Fence and Gate Segment -05] | 2027-10-13 → 2027-10-17 (+4d) | 2027-10-18 → 2027-10-21 (+3d) |  | -30.2d → -33.2d |
| CON-LEG101-FG-1090 | Concrete Works for Ground Beam for Fences [Fence and Gate Segment -05] | 2027-10-18 → 2027-10-21 (+3d) | 2027-11-04 → 2027-11-08 (+4d) |  | -30.2d → -33.2d |
| CON-LEG101-FG-1460 | Plster Works for Fences [Fence and Gate Segment -05] | 2027-11-04 → 2027-11-08 (+4d) | 2027-11-11 → 2027-11-15 (+4d) |  | -30.2d → -33.2d |
| CON-LEG101-FG-1320 | Installation of Metal Fence [Fence and Gate Segment -05] | 2027-11-11 → 2027-11-15 (+4d) | 2027-11-20 → 2027-11-23 (+3d) |  | -30.2d → -33.2d |
| CON-LEG101-FG-1380 | Paint On Cement Plaster [Fence and Gate Segment -05] | 2027-11-20 → 2027-11-23 (+3d) | 2027-11-27 → 2027-11-30 (+3d) |  | -30.2d → -33.2d |
| 2 | **Roundabout & Landscape** | 2027-07-22 → 2027-07-29 (+7d) | 2028-04-11 → 2028-04-18 (+7d) |  |  |
| 10 | **Local – 01** | 2027-07-22 → 2027-07-29 (+7d) | 2028-02-05 → 2028-02-12 (+7d) |  |  |
| 1 | **LOCAL - 01 Segment-01 (From 0+000 to 1+066)** | 2027-07-22 → 2027-07-29 (+7d) | 2028-01-04 → 2028-01-11 (+7d) |  |  |
| 3 | **Irrigation Works** | 2027-07-22 → 2027-07-29 (+7d) | 2027-11-18 → 2027-11-25 (+7d) |  |  |
| 1 | **Secondary Irrigation** | 2027-07-22 → 2027-07-29 (+7d) | 2027-11-18 → 2027-11-25 (+7d) |  |  |
| 1 | **Pipe Work** | 2027-07-22 → 2027-07-29 (+7d) | 2027-10-02 → 2027-10-09 (+7d) |  |  |
| CON-LEG101-LR-4870 | Excavation for Secondary Irrigation [Local – 01 Segment-01] | 2027-07-22 → 2027-07-29 (+7d) | 2027-08-01 → 2027-08-08 (+7d) |  | -100.45d → -106.45d |
| CON-LEG101-LR-4940 | Sand bedding for Secondary Irrigation [Local – 01 Segment-01] | 2027-08-01 → 2027-08-08 (+7d) | 2027-08-07 → 2027-08-14 (+7d) |  | -100.45d → -106.45d |
| CON-LEG101-LR-5010 | Installation of Pipe for Secondary Irrigation [Local – 01 Segment-01] | 2027-08-07 → 2027-08-14 (+7d) | 2027-08-18 → 2027-08-25 (+7d) |  | -100.45d → -106.45d |
| CON-LEG101-LR-5080 | Sand Surround for Secondary Irrigation [Local – 01 Segment-01] | 2027-08-18 → 2027-08-25 (+7d) | 2027-08-24 → 2027-08-31 (+7d) |  | -100.45d → -106.45d |
| CON-LEG101-LR-5150 | Installation of Micron Marker Magnetic Tape [Local – 01 Segment-01] | 2027-08-24 → 2027-08-31 (+7d) | 2027-09-05 → 2027-09-12 (+7d) |  | -100.45d → -106.45d |
| CON-LEG101-LR-5210 | Backfilling to Subgrade Elevation [Local – 01 Segment-01] | 2027-09-05 → 2027-09-12 (+7d) | 2027-09-11 → 2027-09-18 (+7d) |  | -100.45d → -106.45d |
| CON-LEG101-LR-5410 | Installation of tubing for risers connections from laterals [Local – 01 Segment-01] | 2027-09-11 → 2027-09-18 (+7d) | 2027-10-02 → 2027-10-09 (+7d) |  | -100.45d → -106.45d |

| ID | Task | Start | Finish | Total float |
| --- | --- | --- | --- | --- |
| 2 | **Valves and Controller** | 2027-10-02 → 2027-10-09 (+7d) | 2027-11-18 → 2027-11-25 (+7d) |  |
| CON-LEG101-LR-5270 | Installation of Electrical Solenoid Valve [Local – 01 Segment-01] | 2027-10-02 → 2027-10-09 (+7d) | 2027-10-07 → 2027-10-14 (+7d) | -92.45d → -98.45d |
| CON-LEG101-LR-5310 | Installation of quick coupler valve [Local – 01 Segment-01] | 2027-10-07 → 2027-10-14 (+7d) | 2027-10-13 → 2027-10-20 (+7d) | -92.45d → -98.45d |
| CON-LEG101-LR-5350 | Installation of a Flush valve [Local – 01 Segment-01] | 2027-10-13 → 2027-10-20 (+7d) | 2027-10-19 → 2027-10-26 (+7d) | -92.45d → -98.45d |
| CON-LEG101-LR-5470 | Installation of Advanced Irrigation controller [Local – 01 Segment-01] | 2027-10-19 → 2027-10-26 (+7d) | 2027-10-27 → 2027-11-03 (+7d) | -92.45d → -98.45d |
| CON-LEG101-LR-5480 | Install single station decoder for valve connection [Local – 01 Segment-01] | 2027-10-27 → 2027-11-03 (+7d) | 2027-11-04 → 2027-11-11 (+7d) | -92.45d → -98.45d |
| CON-LEG101-LR-5520 | Installation of Decoder cables 12 AWG between valves and controllers [Local – 01 Segment-01] | 2027-11-04 → 2027-11-11 (+7d) | 2027-11-18 → 2027-11-25 (+7d) | -92.45d → -98.45d |
| 14 | **Curbs and edging** | 2027-11-18 → 2027-11-25 (+7d) | 2027-11-21 → 2027-11-28 (+7d) |  |
| CON-LEG101-LR-4790 | Installation of Curbs and edging [Local – 01 Segment-01] | 2027-11-18 → 2027-11-25 (+7d) | 2027-11-21 → 2027-11-28 (+7d) | -92.45d → -98.45d |
| 13 | **Landscape** | 2027-11-21 → 2027-11-28 (+7d) | 2028-01-04 → 2028-01-11 (+7d) |  |
| CON-LEG101-LR-4580 | Site preparation for Planting Area [Local – 01 Segment-01] | 2027-11-21 → 2027-11-28 (+7d) | 2027-12-01 → 2027-12-08 (+7d) | -92.45d → -98.45d |
| CON-LEG101-LR-4650 | Placing Agricutural Soil [Local – 01 Segment-01] | 2027-12-01 → 2027-12-08 (+7d) | 2027-12-12 → 2027-12-19 (+7d) | -92.45d → -98.45d |
| CON-LEG101-LR-4720 | Planting Shrubs And Ground Cover [Local – 01 Segment-01] | 2027-12-12 → 2027-12-19 (+7d) | 2028-01-04 → 2028-01-11 (+7d) | -66.45d → -72.45d |
| 2 | **LOCAL - 01 Segment-02 (From 1+066 to 2+133)** | 2027-10-02 → 2027-10-09 (+7d) | 2028-02-03 → 2028-02-10 (+7d) |  |
| 2 | **Irrigation Works** | 2027-10-02 → 2027-10-09 (+7d) | 2028-01-01 → 2028-01-08 (+7d) |  |
| 1 | **Secondary Irrigation** | 2027-10-02 → 2027-10-09 (+7d) | 2028-01-01 → 2028-01-08 (+7d) |  |
| 1 | **Pipe Work** | 2027-10-02 → 2027-10-09 (+7d) | 2027-11-25 → 2027-12-02 (+7d) |  |
| CON-LEG101-LR-4880 | Excavation for Secondary Irrigation [Local – 01 Segment-02] | 2027-10-02 → 2027-10-09 (+7d) | 2027-10-07 → 2027-10-14 (+7d) | -100.45d → -106.45d |
| CON-LEG101-LR-4950 | Sand bedding for Secondary Irrigation [Local – 01 Segment-02] | 2027-10-07 → 2027-10-14 (+7d) | 2027-10-13 → 2027-10-20 (+7d) | -100.45d → -106.45d |
| CON-LEG101-LR-5020 | Installation of Pipe for Secondary Irrigation [Local – 01 Segment-02] | 2027-10-13 → 2027-10-20 (+7d) | 2027-10-19 → 2027-10-26 (+7d) | -100.45d → -106.45d |
| CON-LEG101-LR-5090 | Sand Surround for Secondary Irrigation [Local – 01 Segment-02] | 2027-10-19 → 2027-10-26 (+7d) | 2027-10-25 → 2027-11-01 (+7d) | -100.45d → -106.45d |
| CON-LEG101-LR-5160 | Installation of Micron Marker Magnetic Tape [Local – 01 Segment-02] | 2027-10-25 → 2027-11-01 (+7d) | 2027-10-31 → 2027-11-07 (+7d) | -100.45d → -106.45d |
| CON-LEG101-LR-5220 | Backfilling to Subgrade Elevation [Local – 01 Segment-02] | 2027-10-31 → 2027-11-07 (+7d) | 2027-11-06 → 2027-11-13 (+7d) | -100.45d → -106.45d |
| CON-LEG101-LR-5420 | Installation of tubing for risers connections from laterals [Local – 01 Segment-02] | 2027-11-06 → 2027-11-13 (+7d) | 2027-11-25 → 2027-12-02 (+7d) | -100.45d → -106.45d |
| 2 | **Valves and Controller** | 2027-12-12 → 2027-12-19 (+7d) | 2028-01-01 → 2028-01-08 (+7d) |  |
| CON-LEG101-LR-5360 | Installation of a Flush valve [Local – 01 Segment-02] | 2027-12-12 → 2027-12-19 (+7d) | 2027-12-18 → 2027-12-25 (+7d) | -92.45d → -98.45d |
| CON-LEG101-LR-5530 | Installation of Decoder cables 12 AWG between valves and controllers [Local – 01 Segment-02] | 2027-12-18 → 2027-12-25 (+7d) | 2028-01-01 → 2028-01-08 (+7d) | -92.45d → -98.45d |
| 14 | **Curbs and edging** | 2028-01-01 → 2028-01-08 (+7d) | 2028-01-03 → 2028-01-10 (+7d) |  |
| CON-LEG101-LR-4800 | Installation of Curbs and edging [Local – 01 Segment-02] | 2028-01-01 → 2028-01-08 (+7d) | 2028-01-03 → 2028-01-10 (+7d) | -92.45d → -98.45d |
| 13 | **Landscape** | 2028-01-03 → 2028-01-10 (+7d) | 2028-02-03 → 2028-02-10 (+7d) |  |
| CON-LEG101-LR-4590 | Site preparation for Planting Area [Local – 01 Segment-02] | 2028-01-03 → 2028-01-10 (+7d) | 2028-01-13 → 2028-01-20 (+7d) | -92.45d → -98.45d |
| CON-LEG101-LR-4660 | Placing Agricutural Soil [Local – 01 Segment-02] | 2028-01-13 → 2028-01-20 (+7d) | 2028-01-24 → 2028-01-31 (+7d) | -92.45d → -98.45d |
| CON-LEG101-LR-4730 | Planting Shrubs And Ground Cover [Local – 01 Segment-02] | 2028-01-24 → 2028-01-31 (+7d) | 2028-02-03 → 2028-02-10 (+7d) | -92.45d → -98.45d |
| 3 | **LOCAL - 01 Segment-03 (From 2+133 to 3+200)** | 2027-11-25 → 2027-12-02 (+7d) | 2028-02-05 → 2028-02-12 (+7d) |  |
| 2 | **Irrigation Works** | 2027-11-25 → 2027-12-02 (+7d) | 2028-01-30 → 2028-02-06 (+7d) |  |
| 1 | **Secondary Irrigation** | 2027-11-25 → 2027-12-02 (+7d) | 2028-01-30 → 2028-02-06 (+7d) |  |
| 1 | **Pipe Work** | 2027-11-25 → 2027-12-02 (+7d) | 2028-01-30 → 2028-02-06 (+7d) |  |
| CON-LEG101-LR-4890 | Excavation for Secondary Irrigation [Local – 01 Segment-03] | 2027-11-25 → 2027-12-02 (+7d) | 2027-12-01 → 2027-12-08 (+7d) | -100.45d → -106.45d |
| CON-LEG101-LR-4960 | Sand bedding for Secondary Irrigation [Local – 01 Segment-03] | 2027-12-01 → 2027-12-08 (+7d) | 2027-12-07 → 2027-12-14 (+7d) | -93.45d → -99.45d |
| CON-LEG101-LR-5030 | Installation of Pipe for Secondary Irrigation [Local – 01 Segment-03] | 2027-12-07 → 2027-12-14 (+7d) | 2027-12-13 → 2027-12-20 (+7d) | -93.45d → -99.45d |
| CON-LEG101-LR-5100 | Sand Surround for Secondary Irrigation [Local – 01 Segment-03] | 2027-12-13 → 2027-12-20 (+7d) | 2027-12-22 → 2027-12-29 (+7d) | -88.45d → -94.45d |
| CON-LEG101-LR-5170 | Installation of Micron Marker Magnetic Tape [Local – 01 Segment-03] | 2027-12-22 → 2027-12-29 (+7d) | 2028-01-01 → 2028-01-08 (+7d) | -88.45d → -94.45d |
| CON-LEG101-LR-5230 | Backfilling to Subgrade Elevation [Local – 01 Segment-03] | 2028-01-01 → 2028-01-08 (+7d) | 2028-01-10 → 2028-01-17 (+7d) | -88.45d → -94.45d |
| CON-LEG101-LR-5430 | Installation of tubing for risers connections from laterals [Local – 01 Segment-03] | 2028-01-10 → 2028-01-17 (+7d) | 2028-01-30 → 2028-02-06 (+7d) | -88.45d → -94.45d |
| 2 | **Valves and Controller** | 2027-12-13 → 2027-12-20 (+7d) | 2028-01-02 → 2028-01-09 (+7d) |  |
| CON-LEG101-LR-5370 | Installation of a Flush valve [Local – 01 Segment-03] | 2027-12-13 → 2027-12-20 (+7d) | 2027-12-19 → 2027-12-26 (+7d) | -93.45d → -99.45d |
| CON-LEG101-LR-5540 | Installation of Decoder cables 12 AWG between valves and controllers [Local – 01 Segment-03] | 2027-12-19 → 2027-12-26 (+7d) | 2028-01-02 → 2028-01-09 (+7d) | -93.45d → -99.45d |
| 14 | **Curbs and edging** | 2028-01-02 → 2028-01-09 (+7d) | 2028-01-04 → 2028-01-11 (+7d) |  |
| CON-LEG101-LR-4810 | Installation of Curbs and edging [Local – 01 Segment-03] | 2028-01-02 → 2028-01-09 (+7d) | 2028-01-04 → 2028-01-11 (+7d) | -93.45d → -99.45d |
| 13 | **Landscape** | 2028-01-04 → 2028-01-11 (+7d) | 2028-02-05 → 2028-02-12 (+7d) |  |
| CON-LEG101-LR-4600 | Site preparation for Planting Area [Local – 01 Segment-03] | 2028-01-04 → 2028-01-11 (+7d) | 2028-01-15 → 2028-01-22 (+7d) | -93.45d → -99.45d |
| CON-LEG101-LR-4670 | Placing Agricutural Soil [Local – 01 Segment-03] | 2028-01-15 → 2028-01-22 (+7d) | 2028-01-25 → 2028-02-01 (+7d) | -93.45d → -99.45d |
| CON-LEG101-LR-4740 | Planting Shrubs And Ground Cover [Local – 01 Segment-03] | 2028-01-25 → 2028-02-01 (+7d) | 2028-02-05 → 2028-02-12 (+7d) | -93.45d → -99.45d |
| 3 | **Local – 02** | 2027-12-01 → 2027-12-08 (+7d) | 2028-02-13 → 2028-02-20 (+7d) |  |
| 3 | **Irrigation Works** | 2027-12-01 → 2027-12-08 (+7d) | 2028-02-01 → 2028-02-08 (+7d) |  |
| 1 | **Secondary Irrigation** | 2027-12-01 → 2027-12-08 (+7d) | 2028-02-01 → 2028-02-08 (+7d) |  |
| 1 | **Pipe Work** | 2027-12-01 → 2027-12-08 (+7d) | 2028-02-01 → 2028-02-08 (+7d) |  |
| CON-LEG101-LR-4900 | Excavation for Secondary Irrigation [Local – 02 ] | 2027-12-01 → 2027-12-08 (+7d) | 2027-12-06 → 2027-12-13 (+7d) | -100.45d → -106.45d |
| CON-LEG101-LR-4970 | Sand bedding for Secondary Irrigation [Local – 02 ] | 2027-12-06 → 2027-12-13 (+7d) | 2027-12-11 → 2027-12-18 (+7d) | -100.45d → -106.45d |
| CON-LEG101-LR-5040 | Installation of Pipe for Secondary Irrigation [Local – 02 ] | 2027-12-11 → 2027-12-18 (+7d) | 2027-12-15 → 2027-12-22 (+7d) | -100.45d → -106.45d |
| CON-LEG101-LR-5110 | Sand Surround for Secondary Irrigation [Local – 02 ] | 2027-12-15 → 2027-12-22 (+7d) | 2027-12-25 → 2028-01-01 (+7d) | -90.45d → -96.45d |
| CON-LEG101-LR-5180 | Installation of Micron Marker Magnetic Tape [Local – 02 ] | 2027-12-25 → 2028-01-01 (+7d) | 2028-01-03 → 2028-01-10 (+7d) | -90.45d → -96.45d |
| CON-LEG101-LR-5240 | Backfilling to Subgrade Elevation [Local – 02 ] | 2028-01-03 → 2028-01-10 (+7d) | 2028-01-15 → 2028-01-22 (+7d) | -90.45d → -96.45d |
| CON-LEG101-LR-5440 | Installation of tubing for risers connections from laterals [Local – 02 ] | 2028-01-15 → 2028-01-22 (+7d) | 2028-02-01 → 2028-02-08 (+7d) | -90.45d → -96.45d |
| 2 | **Valves and Controller** | 2027-12-15 → 2027-12-22 (+7d) | 2028-01-19 → 2028-01-26 (+7d) |  |
| CON-LEG101-LR-5280 | Installation of Electrical Solenoid Valve [Local – 02 ] | 2027-12-15 → 2027-12-22 (+7d) | 2027-12-21 → 2027-12-28 (+7d) | -100.45d → -106.45d |
| CON-LEG101-LR-5320 | Installation of quick coupler valve [Local – 02 ] | 2027-12-21 → 2027-12-28 (+7d) | 2027-12-27 → 2028-01-03 (+7d) | -100.45d → -106.45d |
| CON-LEG101-LR-5380 | Installation of a Flush valve [Local – 02 ] | 2027-12-27 → 2028-01-03 (+7d) | 2028-01-01 → 2028-01-08 (+7d) | -100.45d → -106.45d |
| CON-LEG101-LR-5490 | Install single station decoder for valve connection [Local – 02 ] | 2028-01-01 → 2028-01-08 (+7d) | 2028-01-09 → 2028-01-16 (+7d) | -100.45d → -106.45d |
| CON-LEG101-LR-5550 | Installation of Decoder cables 12 AWG between valves and controllers [Local – 02 ] | 2028-01-09 → 2028-01-16 (+7d) | 2028-01-19 → 2028-01-26 (+7d) | -100.45d → -106.45d |

| ID | Task | Start | Finish | Total float |
| --- | --- | --- | --- | --- |
| 14 | **Curbs and edging** | 2028-01-19 → 2028-01-26 (+7d) | 2028-01-23 → 2028-01-30 (+7d) |  |
| CON-LEG101-LR-4830 | Installation of Curbs and edging [Local – 02 ] | 2028-01-19 → 2028-01-26 (+7d) | 2028-01-23 → 2028-01-30 (+7d) | -100.45d → -106.45d |
| 13 | **Landscape** | 2028-01-23 → 2028-01-30 (+7d) | 2028-02-13 → 2028-02-20 (+7d) |  |
| CON-LEG101-LR-4610 | Site preparation for Planting Area [Local – 02 ] | 2028-01-23 → 2028-01-30 (+7d) | 2028-01-30 → 2028-02-06 (+7d) | -100.45d → -106.45d |
| CON-LEG101-LR-4680 | Placing Agricutural Soil [Local – 02 ] | 2028-01-30 → 2028-02-06 (+7d) | 2028-02-06 → 2028-02-13 (+7d) | -100.45d → -106.45d |
| CON-LEG101-LR-4750 | Planting Shrubs And Ground Cover [Local – 02 ] | 2028-02-06 → 2028-02-13 (+7d) | 2028-02-13 → 2028-02-20 (+7d) | -100.45d → -106.45d |
| 5 | **Local – 04** | 2027-12-01 → 2027-12-08 (+7d) | 2028-02-03 → 2028-02-10 (+7d) |  |
| 2 | **Irrigation Works** | 2027-12-01 → 2027-12-08 (+7d) | 2028-01-20 → 2028-01-27 (+7d) |  |
| 1 | **Secondary Irrigation** | 2027-12-01 → 2027-12-08 (+7d) | 2028-01-20 → 2028-01-27 (+7d) |  |
| 1 | **Pipe Work** | 2027-12-01 → 2027-12-08 (+7d) | 2028-01-04 → 2028-01-11 (+7d) |  |
| CON-LEG101-LR-4910 | Excavation for Secondary Irrigation [Local – 04 ] | 2027-12-01 → 2027-12-08 (+7d) | 2027-12-05 → 2027-12-12 (+7d) | -93.45d → -99.45d |
| CON-LEG101-LR-4980 | Sand bedding for Secondary Irrigation [Local – 04 ] | 2027-12-05 → 2027-12-12 (+7d) | 2027-12-12 → 2027-12-19 (+7d) | -92.45d → -98.45d |
| CON-LEG101-LR-5050 | Installation of Pipe for Secondary Irrigation [Local – 04 ] | 2027-12-12 → 2027-12-19 (+7d) | 2027-12-21 → 2027-12-28 (+7d) | -92.45d → -98.45d |
| CON-LEG101-LR-5120 | Sand Surround for Secondary Irrigation [Local – 04 ] | 2027-12-21 → 2027-12-28 (+7d) | 2027-12-25 → 2028-01-01 (+7d) | -92.45d → -98.45d |
| CON-LEG101-LR-5190 | Installation of Micron Marker Magnetic Tape [Local – 04 ] | 2027-12-25 → 2028-01-01 (+7d) | 2027-12-30 → 2028-01-06 (+7d) | -92.45d → -98.45d |
| CON-LEG101-LR-5250 | Backfilling to Subgrade Elevation [Local – 04 ] | 2027-12-30 → 2028-01-06 (+7d) | 2028-01-02 → 2028-01-09 (+7d) | -92.45d → -98.45d |
| CON-LEG101-LR-5450 | Installation of tubing for risers connections from laterals [Local – 04 ] | 2028-01-02 → 2028-01-09 (+7d) | 2028-01-04 → 2028-01-11 (+7d) | -92.45d → -98.45d |
| 2 | **Valves and Controller** | 2027-12-21 → 2027-12-28 (+7d) | 2028-01-20 → 2028-01-27 (+7d) |  |
| CON-LEG101-LR-5290 | Installation of Electrical Solenoid Valve [Local – 04 ] | 2027-12-21 → 2027-12-28 (+7d) | 2027-12-28 → 2028-01-04 (+7d) | -92.45d → -98.45d |
| CON-LEG101-LR-5330 | Installation of quick coupler valve [Local – 04 ] | 2027-12-28 → 2028-01-04 (+7d) | 2028-01-04 → 2028-01-11 (+7d) | -92.45d → -98.45d |
| CON-LEG101-LR-5390 | Installation of a Flush valve [Local – 04 ] | 2028-01-04 → 2028-01-11 (+7d) | 2028-01-10 → 2028-01-17 (+7d) | -92.45d → -98.45d |
| CON-LEG101-LR-5500 | Install single station decoder for valve connection [Local – 04 ] | 2028-01-10 → 2028-01-17 (+7d) | 2028-01-18 → 2028-01-25 (+7d) | -92.45d → -98.45d |
| CON-LEG101-LR-5560 | Installation of Decoder cables 12 AWG between valves and controllers [Local – 04 ] | 2028-01-18 → 2028-01-25 (+7d) | 2028-01-20 → 2028-01-27 (+7d) | -92.45d → -98.45d |
| 14 | **Curbs and edging** | 2028-01-20 → 2028-01-27 (+7d) | 2028-01-24 → 2028-01-31 (+7d) |  |
| CON-LEG101-LR-4840 | Installation of Curbs and edging [Local – 04 ] | 2028-01-20 → 2028-01-27 (+7d) | 2028-01-24 → 2028-01-31 (+7d) | -92.45d → -98.45d |
| 13 | **Landscape** | 2028-01-24 → 2028-01-31 (+7d) | 2028-02-03 → 2028-02-10 (+7d) |  |
| CON-LEG101-LR-4620 | Site preparation for Planting Area [Local – 04 ] | 2028-01-24 → 2028-01-31 (+7d) | 2028-01-27 → 2028-02-03 (+7d) | -92.45d → -98.45d |
| CON-LEG101-LR-4690 | Placing Agricutural Soil [Local – 04 ] | 2028-01-27 → 2028-02-03 (+7d) | 2028-01-31 → 2028-02-07 (+7d) | -92.45d → -98.45d |
| CON-LEG101-LR-4760 | Planting Shrubs And Ground Cover [Local – 04 ] | 2028-01-31 → 2028-02-07 (+7d) | 2028-02-03 → 2028-02-10 (+7d) | -92.45d → -98.45d |
| 6 | **Local – 06** | 2027-12-01 → 2027-12-08 (+7d) | 2028-02-05 → 2028-02-12 (+7d) |  |
| 2 | **Irrigation Works** | 2027-12-01 → 2027-12-08 (+7d) | 2028-01-18 → 2028-01-25 (+7d) |  |
| 1 | **Secondary Irrigation** | 2027-12-01 → 2027-12-08 (+7d) | 2028-01-18 → 2028-01-25 (+7d) |  |
| 1 | **Pipe Work** | 2027-12-01 → 2027-12-08 (+7d) | 2027-12-21 → 2027-12-28 (+7d) |  |
| CON-LEG101-LR-4920 | Excavation for Secondary Irrigation [Local – 06 ] | 2027-12-01 → 2027-12-08 (+7d) | 2027-12-05 → 2027-12-12 (+7d) | -93.45d → -99.45d |
| CON-LEG101-LR-5060 | Installation of Pipe for Secondary Irrigation [Local – 06 ] | 2027-12-05 → 2027-12-12 (+7d) | 2027-12-08 → 2027-12-15 (+7d) | -93.45d → -99.45d |
| CON-LEG101-LR-5260 | Backfilling to Subgrade Elevation [Local – 06 ] | 2027-12-08 → 2027-12-15 (+7d) | 2027-12-12 → 2027-12-19 (+7d) | -93.45d → -99.45d |
| CON-LEG101-LR-5460 | Installation of tubing for risers connections from laterals [Local – 06 ] | 2027-12-12 → 2027-12-19 (+7d) | 2027-12-21 → 2027-12-28 (+7d) | -93.45d → -99.45d |
| 2 | **Valves and Controller** | 2027-12-21 → 2027-12-28 (+7d) | 2028-01-18 → 2028-01-25 (+7d) |  |
| CON-LEG101-LR-5300 | Installation of Electrical Solenoid Valve [Local – 06 ] | 2027-12-21 → 2027-12-28 (+7d) | 2027-12-26 → 2028-01-02 (+7d) | -93.45d → -99.45d |
| CON-LEG101-LR-5340 | Installation of quick coupler valve [Local – 06 ] | 2027-12-26 → 2028-01-02 (+7d) | 2027-12-30 → 2028-01-06 (+7d) | -93.45d → -99.45d |
| CON-LEG101-LR-5400 | Installation of a Flush valve [Local – 06 ] | 2027-12-30 → 2028-01-06 (+7d) | 2028-01-05 → 2028-01-12 (+7d) | -93.45d → -99.45d |
| CON-LEG101-LR-5510 | Install single station decoder for valve connection [Local – 06 ] | 2028-01-05 → 2028-01-12 (+7d) | 2028-01-11 → 2028-01-18 (+7d) | -93.45d → -99.45d |
| CON-LEG101-LR-5570 | Installation of Decoder cables 12 AWG between valves and controllers [Local – 06 ] | 2028-01-11 → 2028-01-18 (+7d) | 2028-01-18 → 2028-01-25 (+7d) | -93.45d → -99.45d |
| 14 | **Curbs and edging** | 2028-01-18 → 2028-01-25 (+7d) | 2028-01-22 → 2028-01-29 (+7d) |  |
| CON-LEG101-LR-4850 | Installation of Curbs and edging [Local – 06 ] | 2028-01-18 → 2028-01-25 (+7d) | 2028-01-22 → 2028-01-29 (+7d) | -93.45d → -99.45d |
| 13 | **Landscape** | 2028-01-22 → 2028-01-29 (+7d) | 2028-02-05 → 2028-02-12 (+7d) |  |
| CON-LEG101-LR-4630 | Site preparation for Planting Area [Local – 06 ] | 2028-01-22 → 2028-01-29 (+7d) | 2028-01-26 → 2028-02-02 (+7d) | -93.45d → -99.45d |
| CON-LEG101-LR-4700 | Placing Agricutural Soil [Local – 06 ] | 2028-01-26 → 2028-02-02 (+7d) | 2028-01-31 → 2028-02-07 (+7d) | -93.45d → -99.45d |
| CON-LEG101-LR-4770 | Planting Shrubs And Ground Cover [Local – 06 ] | 2028-01-31 → 2028-02-07 (+7d) | 2028-02-05 → 2028-02-12 (+7d) | -93.45d → -99.45d |
| 1 | **Roundabout - 01 (L01 & L04)** | 2027-10-06 → 2027-10-13 (+7d) | 2028-04-01 → 2028-04-08 (+7d) |  |
| 1 | **Irrigation Works** | 2027-10-06 → 2027-10-13 (+7d) | 2028-01-25 → 2028-02-01 (+7d) |  |
| 1 | **Secondary Irrigation** | 2027-10-06 → 2027-10-13 (+7d) | 2028-01-25 → 2028-02-01 (+7d) |  |
| 1 | **Pipe Work** | 2027-10-06 → 2027-10-13 (+7d) | 2028-01-25 → 2028-02-01 (+7d) |  |
| CON-LEG101-RA-1120 | Excavation for Secondary Irrigation [Roundabout : 01 ] | 2027-10-06 → 2027-10-13 (+7d) | 2027-10-18 → 2027-10-25 (+7d) | -151d → -157d |
| CON-LEG101-RA-1150 | Sand bedding for Secondary Irrigation [Roundabout : 01 ] | 2027-10-19 → 2027-10-26 (+7d) | 2027-10-31 → 2027-11-07 (+7d) | -151d → -157d |
| CON-LEG101-RA-1180 | Installation of Pipe for Secondary Irrigation [Roundabout : 01 ] | 2027-11-01 → 2027-11-08 (+7d) | 2027-11-13 → 2027-11-20 (+7d) | -151d → -157d |
| CON-LEG101-RA-1210 | Sand Surround for Secondary Irrigation [Roundabout : 01 ] | 2027-11-14 → 2027-11-21 (+7d) | 2027-11-29 → 2027-12-06 (+7d) | -142d → -148d |
| CON-LEG101-RA-1240 | Installation of Micron Marker Magnetic Tape [Roundabout : 01 ] | 2027-11-30 → 2027-12-07 (+7d) | 2027-12-15 → 2027-12-22 (+7d) | -142d → -148d |
| CON-LEG101-RA-1270 | Backfilling to Subgrade Elevation [Roundabout : 01 ] | 2027-12-16 → 2027-12-23 (+7d) | 2028-01-01 → 2028-01-08 (+7d) | -142d → -148d |
| CON-LEG101-RA-1390 | Installation of tubing for risers connections from laterals [Roundabout : 01 ] | 2028-01-02 → 2028-01-09 (+7d) | 2028-01-25 → 2028-02-01 (+7d) | -142d → -148d |
| 2 | **Valves and Controller** | 2027-11-14 → 2027-11-21 (+7d) | 2028-01-09 → 2028-01-16 (+7d) |  |
| CON-LEG101-RA-1300 | Installation of Electrical Solenoid Valve [Roundabout : 01 ] | 2027-11-14 → 2027-11-21 (+7d) | 2027-11-18 → 2027-11-25 (+7d) | -151d → -157d |
| CON-LEG101-RA-1330 | Installation of quick coupler valve [Roundabout : 01 ] | 2027-11-20 → 2027-11-27 (+7d) | 2027-11-24 → 2027-12-01 (+7d) | -151d → -157d |
| CON-LEG101-RA-1360 | Installation of a Flush valve [Roundabout : 01 ] | 2027-11-25 → 2027-12-02 (+7d) | 2027-12-07 → 2027-12-14 (+7d) | -151d → -157d |
| CON-LEG101-RA-1420 | Install single station decoder for valve connection [Roundabout : 01 ] | 2027-12-08 → 2027-12-15 (+7d) | 2027-12-23 → 2027-12-30 (+7d) | -140d → -146d |
| A | Catch | 2027-12-25 → 2028-01-01 (+7d) | 2028-01-09 → 2028-01-16 (+7d) | -140d → -146d |
| 3 | **Curbs and edging** | 2028-01-10 → 2028-01-17 (+7d) | 2028-01-23 → 2028-01-30 (+7d) |  |
| CON-LEG101-RA-1090 | Installation of Curbs and edging [Roundabout : 01 ] | 2028-01-10 → 2028-01-17 (+7d) | 2028-01-23 → 2028-01-30 (+7d) | -140d → -146d |
| 2 | **Landscape** | 2028-01-26 → 2028-02-02 (+7d) | 2028-04-01 → 2028-04-08 (+7d) |  |
| CON-LEG101-RA-1000 | Site preparation for Planting Area [Roundabout : 01 ] | 2028-01-26 → 2028-02-02 (+7d) | 2028-02-16 → 2028-02-23 (+7d) | -142d → -148d |

| ID | Task | Start | Finish | Total float |
| --- | --- | --- | --- | --- |
| CON-LEG101-RA-1030 | Placing Agricutural Soil [Roundabout : 01 ] | 2028-02-17 → 2028-02-24 (+7d) | 2028-03-09 → 2028-03-16 (+7d) | -142d → -148d |
| CON-LEG101-RA-1060 | Planting Shrubs And Ground Cover [Roundabout : 01 ] | 2028-03-11 → 2028-03-18 (+7d) | 2028-04-01 → 2028-04-08 (+7d) | -142d → -148d |
| 4 | **Roundabout - 02 (L01 & L03)** | 2027-12-08 → 2027-12-15 (+7d) | 2028-04-11 → 2028-04-18 (+7d) |  |
| 1 | **Irrigation Works** | 2027-12-08 → 2027-12-15 (+7d) | 2028-03-28 → 2028-04-04 (+7d) |  |
| 1 | **Secondary Irrigation** | 2027-12-08 → 2027-12-15 (+7d) | 2028-03-28 → 2028-04-04 (+7d) |  |
| 1 | **Pipe Work** | 2027-12-08 → 2027-12-15 (+7d) | 2028-03-28 → 2028-04-04 (+7d) |  |
| CON-LEG101-RA-1130 | Excavation for Secondary Irrigation [Roundabout : 02 ] | 2027-12-08 → 2027-12-15 (+7d) | 2027-12-20 → 2027-12-27 (+7d) | -151d → -157d |
| CON-LEG101-RA-1160 | Sand bedding for Secondary Irrigation [Roundabout : 02 ] | 2027-12-21 → 2027-12-28 (+7d) | 2028-01-02 → 2028-01-09 (+7d) | -151d → -157d |
| CON-LEG101-RA-1190 | Installation of Pipe for Secondary Irrigation [Roundabout : 02 ] | 2028-01-03 → 2028-01-10 (+7d) | 2028-01-15 → 2028-01-22 (+7d) | -151d → -157d |
| CON-LEG101-RA-1220 | Sand Surround for Secondary Irrigation [Roundabout : 02 ] | 2028-01-16 → 2028-01-23 (+7d) | 2028-01-31 → 2028-02-07 (+7d) | -139d → -145d |
| CON-LEG101-RA-1250 | Installation of Micron Marker Magnetic Tape [Roundabout : 02 ] | 2028-02-01 → 2028-02-08 (+7d) | 2028-02-16 → 2028-02-23 (+7d) | -139d → -145d |
| CON-LEG101-RA-1280 | Backfilling to Subgrade Elevation [Roundabout : 02 ] | 2028-02-17 → 2028-02-24 (+7d) | 2028-03-04 → 2028-03-11 (+7d) | -139d → -145d |
| CON-LEG101-RA-1400 | Installation of tubing for risers connections from laterals [Roundabout : 02 ] | 2028-03-05 → 2028-03-12 (+7d) | 2028-03-28 → 2028-04-04 (+7d) | -139d → -145d |
| 2 | **Valves and Controller** | 2028-01-16 → 2028-01-23 (+7d) | 2028-03-04 → 2028-03-11 (+7d) |  |
| CON-LEG101-RA-1310 | Installation of Electrical Solenoid Valve [Roundabout : 02 ] | 2028-01-16 → 2028-01-23 (+7d) | 2028-01-20 → 2028-01-27 (+7d) | -151d → -157d |
| CON-LEG101-RA-1340 | Installation of quick coupler valve [Roundabout : 02 ] | 2028-01-22 → 2028-01-29 (+7d) | 2028-01-26 → 2028-02-02 (+7d) | -151d → -157d |
| CON-LEG101-RA-1370 | Installation of a Flush valve [Roundabout : 02 ] | 2028-01-27 → 2028-02-03 (+7d) | 2028-02-08 → 2028-02-15 (+7d) | -151d → -157d |
| CON-LEG101-RA-1430 | Install single station decoder for valve connection [Roundabout : 02 ] | 2028-02-09 → 2028-02-16 (+7d) | 2028-02-16 → 2028-02-23 (+7d) | -151d → -157d |
| CON-LEG101-RA-1460 | Installation of Decoder cables 12 AWG between valves and controllers [Roundabout : 02 ] | 2028-02-17 → 2028-02-24 (+7d) | 2028-03-04 → 2028-03-11 (+7d) | -151d → -157d |
| 3 | **Curbs and edging** | 2028-03-05 → 2028-03-12 (+7d) | 2028-03-07 → 2028-03-14 (+7d) |  |
| CON-LEG101-RA-1100 | Installation of Curbs and edging [Roundabout : 02 ] | 2028-03-05 → 2028-03-12 (+7d) | 2028-03-07 → 2028-03-14 (+7d) | -151d → -157d |
| 2 | **Landscape** | 2028-03-08 → 2028-03-15 (+7d) | 2028-04-11 → 2028-04-18 (+7d) |  |
| CON-LEG101-RA-1010 | Site preparation for Planting Area [Roundabout : 02 ] | 2028-03-08 → 2028-03-15 (+7d) | 2028-03-19 → 2028-03-26 (+7d) | -151d → -157d |
| CON-LEG101-RA-1040 | Placing Agricutural Soil [Roundabout : 02 ] | 2028-03-20 → 2028-03-27 (+7d) | 2028-03-30 → 2028-04-06 (+7d) | -151d → -157d |
| CON-LEG101-RA-1070 | Planting Shrubs And Ground Cover [Roundabout : 02 ] | 2028-04-01 → 2028-04-08 (+7d) | 2028-04-11 → 2028-04-18 (+7d) | -151d → -157d |
| 2 | **Roundabout - 03 (L03 & L05)** | 2027-12-21 → 2027-12-28 (+7d) | 2028-04-11 → 2028-04-18 (+7d) |  |
| 1 | **Irrigation Works** | 2027-12-21 → 2027-12-28 (+7d) | 2028-03-27 → 2028-04-03 (+7d) |  |
| 1 | **Secondary Irrigation** | 2027-12-21 → 2027-12-28 (+7d) | 2028-03-27 → 2028-04-03 (+7d) |  |
| 1 | **Pipe Work** | 2027-12-21 → 2027-12-28 (+7d) | 2028-03-27 → 2028-04-03 (+7d) |  |
| CON-LEG101-RA-1140 | Excavation for Secondary Irrigation [Roundabout : 03 ] | 2027-12-21 → 2027-12-28 (+7d) | 2028-01-02 → 2028-01-09 (+7d) | -151d → -157d |
| CON-LEG101-RA-1170 | Sand bedding for Secondary Irrigation [Roundabout : 03 ] | 2028-01-03 → 2028-01-10 (+7d) | 2028-01-13 → 2028-01-20 (+7d) | -151d → -157d |
| CON-LEG101-RA-1200 | Installation of Pipe for Secondary Irrigation [Roundabout : 03 ] | 2028-01-15 → 2028-01-22 (+7d) | 2028-01-26 → 2028-02-02 (+7d) | -151d → -157d |
| CON-LEG101-RA-1230 | Sand Surround for Secondary Irrigation [Roundabout : 03 ] | 2028-01-27 → 2028-02-03 (+7d) | 2028-02-08 → 2028-02-15 (+7d) | -138d → -144d |
| CON-LEG101-RA-1260 | Installation of Micron Marker Magnetic Tape [Roundabout : 03 ] | 2028-02-09 → 2028-02-16 (+7d) | 2028-02-21 → 2028-02-28 (+7d) | -138d → -144d |
| CON-LEG101-RA-1290 | Backfilling to Subgrade Elevation [Roundabout : 03 ] | 2028-02-22 → 2028-02-29 (+7d) | 2028-03-05 → 2028-03-12 (+7d) | -138d → -144d |
| CON-LEG101-RA-1410 | Installation of tubing for risers connections from laterals [Roundabout : 03 ] | 2028-03-06 → 2028-03-13 (+7d) | 2028-03-27 → 2028-04-03 (+7d) | -138d → -144d |
| 2 | **Valves and Controller** | 2028-01-27 → 2028-02-03 (+7d) | 2028-03-15 → 2028-03-22 (+7d) |  |
| CON-LEG101-RA-1320 | Installation of Electrical Solenoid Valve [Roundabout : 03 ] | 2028-01-27 → 2028-02-03 (+7d) | 2028-02-01 → 2028-02-08 (+7d) | -151d → -157d |
| CON-LEG101-RA-1350 | Installation of quick coupler valve [Roundabout : 03 ] | 2028-02-02 → 2028-02-09 (+7d) | 2028-02-07 → 2028-02-14 (+7d) | -151d → -157d |
| CON-LEG101-RA-1380 | Installation of a Flush valve [Roundabout : 03 ] | 2028-02-08 → 2028-02-15 (+7d) | 2028-02-20 → 2028-02-27 (+7d) | -151d → -157d |
| CON-LEG101-RA-1440 | Install single station decoder for valve connection [Roundabout : 03 ] | 2028-02-21 → 2028-02-28 (+7d) | 2028-02-28 → 2028-03-06 (+7d) | -151d → -157d |
| CON-LEG101-RA-1470 | Installation of Decoder cables 12 AWG between valves and controllers [Roundabout : 03 ] | 2028-02-29 → 2028-03-07 (+7d) | 2028-03-15 → 2028-03-22 (+7d) | -151d → -157d |
| 3 | **Curbs and edging** | 2028-03-16 → 2028-03-23 (+7d) | 2028-03-19 → 2028-03-26 (+7d) |  |
| CON-LEG101-RA-1110 | Installation of Curbs and edging [Roundabout : 03 ] | 2028-03-16 → 2028-03-23 (+7d) | 2028-03-19 → 2028-03-26 (+7d) | -151d → -157d |
| 2 | **Landscape** | 2028-03-20 → 2028-03-27 (+7d) | 2028-04-11 → 2028-04-18 (+7d) |  |
| CON-LEG101-RA-1020 | Site preparation for Planting Area [Roundabout : 03 ] | 2028-03-20 → 2028-03-27 (+7d) | 2028-03-27 → 2028-04-03 (+7d) | -151d → -157d |
| CON-LEG101-RA-1050 | Placing Agricutural Soil [Roundabout : 03 ] | 2028-03-28 → 2028-04-04 (+7d) | 2028-04-03 → 2028-04-10 (+7d) | -151d → -157d |
| CON-LEG101-RA-1080 | Planting Shrubs And Ground Cover [Roundabout : 03 ] | 2028-04-04 → 2028-04-11 (+7d) | 2028-04-11 → 2028-04-18 (+7d) | -151d → -157d |
| 6 | **Testing & Commissioning** |  | 2028-04-19 → 2028-04-26 (+7d) |  |
| CON-LEG101-TC-1020 | Test for Public Water Utility Distribution |  | 2027-12-06 → 2027-12-13 (+7d) | -77d → -83d |
| CON-LEG101-TC-1030 | Test for TSE Network |  | 2027-12-20 → 2027-12-27 (+7d) | -68.4d → -74.4d |
| CON-LEG101-TC-1040 | Test for Sanitary Sewerage |  | 2027-12-07 → 2027-12-14 (+7d) | -73.4d → -79.4d |
| CON-LEG101-TC-1050 | Test for Stormwater Utilities |  | 2027-12-09 → 2027-12-16 (+7d) | -73.4d → -79.4d |
| CON-LEG101-TC-1060 | Test for Bridge Work |  | 2027-12-13 → 2027-12-20 (+7d) | -68.4d → -74.4d |
| CON-LEG101-TC-1080 | Test for Fence & Gate |  | 2027-11-30 → 2027-12-04 (+4d) | -30.2d → -33.2d |
| CON-LEG101-TC-1000 | Test for Telecommunications Work |  | 2027-12-29 → 2028-01-05 (+7d) | -64.2d → -70.2d |
| CON-LEG101-TC-1010 | Test for Electrical Network |  | 2027-12-18 → 2027-12-25 (+7d) | -68.4d → -74.4d |
| CON-LEG101-TC-1070 | Test for CCTV feeding system and GSM |  | 2028-01-02 → 2028-01-09 (+7d) | -62d → -68d |
| CON-LEG101-TC-1100 | Test for Road Lighting |  | 2027-12-23 → 2027-12-30 (+7d) | -64.2d → -70.2d |
| CON-LEG101-TC-1110 | Test for Road Works |  | 2027-12-05 → 2027-12-12 (+7d) | -85.4d → -91.4d |
| CON-LEG101-TC-1120 | Test for Earthing System |  | 2028-01-06 → 2028-01-13 (+7d) | -62d → -68d |
| CON-LEG101-TC-1090 | Test for Irrigation and Landscape | 2028-04-12 → 2028-04-19 (+7d) | 2028-04-19 → 2028-04-26 (+7d) | -151d → -157d |
| 7 | **Project Close-out** | 2027-11-30 → 2027-12-04 (+4d) | 2028-05-13 → 2028-05-20 (+7d) |  |
| 1 | **As-Built DWGs** | 2027-11-30 → 2027-12-04 (+4d) | 2028-05-01 → 2028-05-08 (+7d) |  |
| 1 | **As-Built DWGs Submittal** | 2027-11-30 → 2027-12-04 (+4d) | 2028-04-25 → 2028-05-02 (+7d) |  |
| CON-LEG101-ABS-1080 | As-Built DWGs Submittal for Fence & Gate | 2027-11-30 → 2027-12-04 (+4d) | 2027-12-07 → 2027-12-11 (+4d) | -30.2d → -33.2d |
| CON-LEG101-ABS-1110 | As-Built DWGs Submittal for Road Works | 2027-12-05 → 2027-12-12 (+7d) | 2027-12-19 → 2027-12-26 (+7d) | -85.4d → -91.4d |
| CON-LEG101-ABS-1020 | As-Built DWGs Submittal for Public Water Utility Distribution | 2027-12-07 → 2027-12-14 (+7d) | 2027-12-20 → 2027-12-27 (+7d) | -77d → -83d |
| CON-LEG101-ABS-1050 | As-Built DWGs Submittal for Stormwater Utilities | 2027-12-09 → 2027-12-16 (+7d) | 2027-12-23 → 2027-12-30 (+7d) | -73.4d → -79.4d |
| CON-LEG101-ABS-1060 | As-Built DWGs Submittal for Bridge Work | 2027-12-13 → 2027-12-20 (+7d) | 2027-12-27 → 2028-01-03 (+7d) | -62.2d → -68.2d |

| ID | Task | Start | Finish | Total float |
| --- | --- | --- | --- | --- |
| CON-LEG101-ABS-1030 | As-Built DWGs Submittal for TSE Network | 2027-12-20 → 2027-12-27 (+7d) | 2028-01-03 → 2028-01-10 (+7d) | -68.4d → -74.4d |
| CON-LEG101-ABS-1040 | As-Built DWGs Submittal for Sanitary Sewerage | 2027-12-23 → 2027-12-30 (+7d) | 2028-01-06 → 2028-01-13 (+7d) | -73.4d → -79.4d |
| CON-LEG101-ABS-1100 | As-Built DWGs Submittal for Road Lighting | 2027-12-25 → 2028-01-01 (+7d) | 2028-01-06 → 2028-01-13 (+7d) | -62d → -68d |
| CON-LEG101-ABS-1000 | As-Built DWGs Submittal for Telecommunications Work | 2027-12-29 → 2028-01-05 (+7d) | 2028-01-12 → 2028-01-19 (+7d) | -64.2d → -70.2d |
| CON-LEG101-ABS-1070 | As-Built DWGs Submittal for CCTV feeding system and GSM | 2028-01-02 → 2028-01-09 (+7d) | 2028-01-11 → 2028-01-18 (+7d) | -60.8d → -66.8d |
| CON-LEG101-ABS-1010 | As-Built DWGs Submittal for Electrical Network | 2028-01-06 → 2028-01-13 (+7d) | 2028-01-20 → 2028-01-27 (+7d) | -73.4d → -79.4d |
| CON-LEG101-ABS-1120 | As-Built DWGs Submittal for Earthing System | 2028-01-08 → 2028-01-15 (+7d) | 2028-01-12 → 2028-01-19 (+7d) | -62d → -68d |
| CON-LEG101-ABS-1090 | As-Built DWGs Submittal for Irrigation and Landscape | 2028-04-20 → 2028-04-27 (+7d) | 2028-04-25 → 2028-05-02 (+7d) | -151d → -157d |
| 2 | **As-Built DWGs Approval** | 2027-12-07 → 2027-12-11 (+4d) | 2028-05-01 → 2028-05-08 (+7d) |  |
| CON-LEG101-ABA-1080 | As- Built DWGs Approval for Fence & Gate | 2027-12-07 → 2027-12-11 (+4d) | 2027-12-13 → 2027-12-16 (+3d) | -30.2d → -33.2d |
| CON-LEG101-ABA-1110 | As- Built DWGs Approval for Road Works | 2027-12-19 → 2027-12-26 (+7d) | 2027-12-30 → 2028-01-06 (+7d) | -85.4d → -91.4d |
| CON-LEG101-ABA-1020 | As- Built DWGs Approval for Public Water Utility Distribution | 2027-12-30 → 2028-01-06 (+7d) | 2028-01-11 → 2028-01-18 (+7d) | -85.4d → -91.4d |
| CON-LEG101-ABA-1030 | As- Built DWGs Approval for TSE Network | 2028-01-03 → 2028-01-10 (+7d) | 2028-01-15 → 2028-01-22 (+7d) | -68.4d → -74.4d |
| CON-LEG101-ABA-1100 | As- Built DWGs Approval for Road Lighting | 2028-01-08 → 2028-01-15 (+7d) | 2028-01-18 → 2028-01-25 (+7d) | -62d → -68d |
| CON-LEG101-ABA-1050 | As- Built DWGs Approval for Stormwater Utilities | 2028-01-11 → 2028-01-18 (+7d) | 2028-01-23 → 2028-01-30 (+7d) | -85.4d → -91.4d |
| CON-LEG101-ABA-1070 | As- Built DWGs Approval for CCTV feeding system and GSM | 2028-01-11 → 2028-01-18 (+7d) | 2028-01-17 → 2028-01-24 (+7d) | -60.8d → -66.8d |
| CON-LEG101-ABA-1000 | As- Built DWGs Approval for Telecommunications Work | 2028-01-12 → 2028-01-19 (+7d) | 2028-01-22 → 2028-01-29 (+7d) | -64.2d → -70.2d |
| CON-LEG101-ABA-1120 | As- Built DWGs Approval for Earthing System | 2028-01-13 → 2028-01-20 (+7d) | 2028-01-18 → 2028-01-25 (+7d) | -62d → -68d |
| CON-LEG101-ABA-1060 | As- Built DWGs Approval for Bridge Work | 2028-01-23 → 2028-01-30 (+7d) | 2028-02-03 → 2028-02-10 (+7d) | -85.4d → -91.4d |
| CON-LEG101-ABA-1010 | As- Built DWGs Approval for Electrical Network | 2028-02-03 → 2028-02-10 (+7d) | 2028-02-15 → 2028-02-22 (+7d) | -85.4d → -91.4d |
| CON-LEG101-ABA-1040 | As- Built DWGs Approval for Sanitary Sewerage | 2028-02-03 → 2028-02-10 (+7d) | 2028-02-15 → 2028-02-22 (+7d) | -85.4d → -91.4d |
| CON-LEG101-ABA-1090 | As- Built DWGs Approval for Irrigation and Landscape | 2028-04-26 → 2028-05-03 (+7d) | 2028-05-01 → 2028-05-08 (+7d) | -151d → -157d |
| 2 | **Demobilization** | 2028-05-02 → 2028-05-09 (+7d) | 2028-05-13 → 2028-05-20 (+7d) |  |
| CON-LEG101-DM-1000 | Demobilization of Manpower | 2028-05-02 → 2028-05-09 (+7d) | 2028-05-07 → 2028-05-14 (+7d) | -151d → -157d |
| CON-LEG101-DM-1010 | Removal of Equipment from Site | 2028-05-02 → 2028-05-09 (+7d) | 2028-05-07 → 2028-05-14 (+7d) | -151d → -157d |
| CON-LEG101-DM-1020 | Site Clean Up | 2028-05-02 → 2028-05-09 (+7d) | 2028-05-07 → 2028-05-14 (+7d) | -151d → -157d |
| CON-LEG101-DM-1030 | Removal of Site Offices and Structures | 2028-05-02 → 2028-05-09 (+7d) | 2028-05-07 → 2028-05-14 (+7d) | -151d → -157d |
| CON-LEG101-DM-1040 | Restoration of Ground Surfaces | 2028-05-08 → 2028-05-15 (+7d) | 2028-05-13 → 2028-05-20 (+7d) | -151d → -157d |

## Version 5 (data date 2026-10-27, saved 2026-10-27, file 02. JDH1-02-003 -ENJ-WPR-049-27-10-2026 Update Schedule.xer)

Last finish 2028-05-20 → 2028-05-27 (+7d). Complete tasks 1278 → 1288.

Changed:

| ID | Task | Start | Finish | Complete | Total float |
| --- | --- | --- | --- | --- | --- |
| 5 | **Milestones** |  | 2028-05-20 → 2028-05-27 (+7d) |  |  |
| 1 | **Key Milestones** |  | 2028-05-20 → 2028-05-27 (+7d) |  |  |
| CON-LEG101-MS-1000 | Project Completion Date | 2028-05-20 → 2028-05-27 (+7d) | 2028-05-20 → 2028-05-27 (+7d) |  | -157d → -163d |
| 2 | **Contractual Milestone** |  | 2028-05-20 → 2028-05-27 (+7d) |  |  |
| 4 | **Engineering** | 2026-11-07 → 2026-11-14 (+7d) | 2026-11-07 → 2026-11-14 (+7d) |  |  |
| CON-LEG101-MS-1060 | Finish Submission and Approval for Shop Drawings, Method of Statement, Prequalification and Materials | 2026-11-07 → 2026-11-14 (+7d) | 2026-11-07 → 2026-11-14 (+7d) |  | -55d → -61d |
| 1 | **Procurement** | 2026-11-01 → 2026-11-08 (+7d) | 2026-11-01 → 2026-11-08 (+7d) |  |  |
| CON-LEG101-MS-1100 | Finish PO for Short Lead Item & Long Lead Item | 2026-11-01 → 2026-11-08 (+7d) | 2026-11-01 → 2026-11-08 (+7d) |  | -49.2d → -55.2d |
| 5 | **Construction** | 2027-01-18 → 2027-01-25 (+7d) | 2028-05-20 → 2028-05-27 (+7d) |  |  |
| CON-LEG101-MS-1130 | Completion of Deep infrastructure network | 2027-01-18 → 2027-01-25 (+7d) | 2027-01-18 → 2027-01-25 (+7d) |  | 42.85d → 38.65d |
| CON-LEG101-MS-1120 | Completion of Roads & Meduim Voltage | 2027-06-19 → 2027-06-26 (+7d) | 2027-06-19 → 2027-06-26 (+7d) |  | -106.45d → -110.65d |
| CON-LEG101-MS-1140 | Completion of Shallow infrastructure network | 2027-10-03 → 2027-10-10 (+7d) | 2027-10-03 → 2027-10-10 (+7d) |  | -42d → -40.4d |
| CON-LEG101-MS-1150 | Completion all Works | 2028-05-20 → 2028-05-27 (+7d) | 2028-05-20 → 2028-05-27 (+7d) |  | -157d → -163d |
| 6 | **Monitoring and Control Milestone** | 2027-06-20 → 2027-06-27 (+7d) | 2028-04-18 → 2028-04-25 (+7d) |  |  |
| CON-LEG101-MS-1050 | Completion of Outside Boundary Area's Scope (Tie-in Lines) | 2027-06-20 → 2027-06-27 (+7d) | 2027-06-20 → 2027-06-27 (+7d) |  | 23.18d → 17.18d |
| CON-LEG101-MS-1020 | Completion of Bridge | 2027-08-25 → 2027-08-31 (+6d) | 2027-08-25 → 2027-08-31 (+6d) |  | -64.2d → -69.5d |
| CON-LEG101-MS-1040 | Completion of Fence and Gate | 2027-11-30 → 2027-12-07 (+7d) | 2027-11-30 → 2027-12-07 (+7d) |  | -33.2d → -38.5d |
| CON-LEG101-MS-1010 | Completion of Roads Finishing | 2027-12-08 → 2027-12-15 (+7d) | 2027-12-08 → 2027-12-15 (+7d) |  | -91.4d → -97.4d |
| CON-LEG101-MS-1030 | Completion of Roundabout & Landscape works | 2028-04-18 → 2028-04-25 (+7d) | 2028-04-18 → 2028-04-25 (+7d) |  | -157d → -163d |
| 3 | **Engineering** |  | 2026-11-07 → 2026-11-14 (+7d) |  |  |
| 2 | **Shop Drawings** |  | 2026-11-07 → 2026-11-14 (+7d) |  |  |
| 1 | **Shop Drawings Submittal** |  | 2026-10-31 → 2026-11-07 (+7d) |  |  |
| 2 | **Shop Drawings Submittal for Electrical Network** |  | 2026-10-31 → 2026-11-07 (+7d) |  |  |
| CON-LEG101-EN-1390 | Shop DWG Submittal for Medium Voltage Network | 2026-10-21 → 2026-10-28 (+7d) | 2026-10-31 → 2026-11-07 (+7d) |  | -55d → -61d |
| 2 | **Shop Drawings Approval** |  | 2026-11-07 → 2026-11-14 (+7d) |  |  |
| 2 | **Shop Drawings Approval for Electrical Network** |  | 2026-11-07 → 2026-11-14 (+7d) |  |  |
| CON-LEG101-EN-1660 | Shop DWG Approval for Medium Voltage Network | 2026-11-01 → 2026-11-08 (+7d) | 2026-11-07 → 2026-11-14 (+7d) |  | -55d → -61d |
| 4 | **Pre-qualification and Material** |  | 2026-10-26 → 2026-11-02 (+7d) |  |  |
| 4 | **Electrical Network** |  | 2026-10-26 → 2026-11-02 (+7d) |  |  |
| 13 | **Ring Main Unit** |  | 2026-10-26 → 2026-11-02 (+7d) |  |  |
| CON-LEG101-SB-1710 | Pre-qualification and Material Approval for Ring Main Unit |  | 2026-10-26 → 2026-11-02 (+7d) |  | -49.2d → -55.2d |
| 14 | **Street Lighting Sub-station** |  | 2026-10-26 → 2026-11-02 (+7d) |  |  |
| CON-LEG101-SB-1750 | Pre-qualification and Material Approval for Street Lighting Sub-station |  | 2026-10-26 → 2026-11-02 (+7d) |  | -44.2d → -50.2d |
| 4 | **Procurement** |  | 2027-08-21 → 2027-08-25 (+4d) |  |  |
| 2 | **Short Lead Item** |  | 2027-08-21 → 2027-08-25 (+4d) |  |  |
| 1 | **Road Works - Civil** |  | 2027-08-21 → 2027-08-25 (+4d) |  |  |
| 9 | **Pavement Markings** |  | 2027-08-21 → 2027-08-25 (+4d) |  |  |
| CON-LEG101-PR-1600 | Material Delivery for Pavement Markings | 2027-07-29 → 2027-08-03 (+5d) | 2027-08-16 → 2027-08-21 (+5d) |  | -69.45d → -73.65d |
| CON-LEG101-PR-2070 | Staging Time for Pavement Markings | 2027-08-16 → 2027-08-21 (+5d) | 2027-08-21 → 2027-08-25 (+4d) |  | -69.45d → -73.65d |
| 6 | **Bituminous Base & Wearing Course** |  | 2027-08-11 → 2027-08-10 (-1d) |  |  |
| CON-LEG101-PR-1530 | Material Delivery for Wearing Course |  | 2027-08-11 → 2027-08-10 (-1d) | 47% → 73% | -69.45d → -73.65d |
| 1 | **Long Lead Item** |  | 2027-06-12 → 2027-06-19 (+7d) |  |  |
| 10 | **Fence & Gates** |  | 2027-01-23 → 2027-01-30 (+7d) |  |  |
| 2 | **Gates** |  | 2027-01-23 → 2027-01-30 (+7d) |  |  |
| CON-LEG101-PR-2040 | Material Fabrication for Gates |  | 2026-12-24 → 2026-12-31 (+7d) |  | -12.95d → -18.95d |
| CON-LEG101-PR-2050 | Material Delivery for Gates | 2026-12-26 → 2027-01-02 (+7d) | 2027-01-11 → 2027-01-18 (+7d) |  | -12.95d → -18.95d |
| CON-LEG101-PR-2090 | Staging Time for Gates | 2027-01-12 → 2027-01-19 (+7d) | 2027-01-23 → 2027-01-30 (+7d) |  | -12.95d → -18.95d |
| 1 | **Electrical Network** |  | 2027-06-12 → 2027-06-19 (+7d) |  |  |
| 12 | **Cable Termination & Joints** |  | 2027-03-23 → 2027-03-30 (+7d) |  |  |
| CON-LEG101-PR-1240 | PO for Cable Termination & Joints |  | 2026-10-26 → 2026-11-02 (+7d) |  | -125d → -131d |
| CON-LEG101-PR-1270 | Material Fabrication for Cable Termination & Joints | 2026-10-27 → 2026-11-03 (+7d) | 2027-02-08 → 2027-02-20 (+12d) |  | -125d → -131d |
| CON-LEG101-PR-1300 | Material Delivery for Cable Termination & Joints | 2027-02-14 → 2027-02-21 (+7d) | 2027-03-03 → 2027-03-10 (+7d) |  | -125d → -131d |
| CON-LEG101-PR-1450 | Stagging Time for Cable Termination & Joints | 2027-03-13 → 2027-03-20 (+7d) | 2027-03-23 → 2027-03-30 (+7d) |  | -132d → -138d |
| 1 | **Medium Voltage Cable** |  | 2027-03-11 → 2027-03-18 (+7d) |  |  |
| CON-LEG101-PR-1000 | PO for Medium Voltage Cable |  | 2026-10-26 → 2026-11-02 (+7d) |  | -140d → -146d |
| CON-LEG101-PR-1080 | Material Fabrication for Medium Voltage Cable | 2026-11-16 → 2026-11-23 (+7d) | 2027-01-24 → 2027-01-31 (+7d) |  | -157d → -163d |
| CON-LEG101-PR-1160 | Material Delivery for Medium Voltage Cable | 2027-01-31 → 2027-02-07 (+7d) | 2027-02-21 → 2027-03-01 (+8d) |  | -157d → -163d |
| CON-LEG101-PR-1880 | Staging Time for Medium Voltage Cable | 2027-02-23 → 2027-03-02 (+7d) | 2027-03-11 → 2027-03-18 (+7d) |  | -157d → -163d |
| 4 | **Street Lighting Sub-station** |  | 2027-05-09 → 2027-05-20 (+11d) |  |  |
| CON-LEG101-PR-1090 | Material Fabrication for Street Lighting Sub-station | 2027-01-25 → 2027-02-01 (+7d) | 2027-04-10 → 2027-04-17 (+7d) |  | -98.95d → -104.95d |
| CON-LEG101-PR-1170 | Material Delivery for Street Lighting Sub-station | 2027-04-11 → 2027-04-18 (+7d) | 2027-04-27 → 2027-05-04 (+7d) |  | -98.95d → -104.95d |
| CON-LEG101-PR-1890 | Staging Time for Street Lighting Sub-station | 2027-04-28 → 2027-05-05 (+7d) | 2027-05-09 → 2027-05-20 (+11d) |  | -98.95d → -104.95d |
| 2 | **Ring Main Unit** | 2026-10-26 → 2026-11-02 (+7d) | 2027-06-12 → 2027-06-19 (+7d) |  |  |
| CON-LEG101-PR-2480 | PO for Ring Main Unit | 2026-10-26 → 2026-11-02 (+7d) | 2026-11-01 → 2026-11-08 (+7d) |  | -49.2d → -55.2d |
| CON-LEG101-PR-2490 | Material Fabrication for Ring Main Unit | 2027-01-13 → 2027-01-20 (+7d) | 2027-04-10 → 2027-04-17 (+7d) |  | -73.95d → -79.95d |
| CON-LEG101-PR-2500 | Material Delivery for Ring Main Unit | 2027-05-10 → 2027-05-22 (+12d) | 2027-05-31 → 2027-06-07 (+7d) |  | -98.95d → -104.95d |
| CON-LEG101-PR-2510 | Staging Time for Ring Main Unit | 2027-06-01 → 2027-06-08 (+7d) | 2027-06-12 → 2027-06-19 (+7d) |  | -98.95d → -104.95d |
| 6 | **Landscape Works** |  | 2027-05-31 → 2027-06-07 (+7d) |  |  |
| 8 | **Shrubs And Ground Cover** |  | 2027-05-31 → 2027-06-07 (+7d) |  |  |
| CON-LEG101-PR-3000 | Material Delivery for agricultural soil | 2027-01-25 → 2027-02-01 (+7d) | 2027-05-19 → 2027-05-26 (+7d) |  | 99d → 93d |

| ID | Task | Start | Finish | Total float |
| --- | --- | --- | --- | --- |
| CON-LEG101-PR-3060 | Staging Time for agricultural soil | 2027-05-20 → 2027-05-27 (+7d) | 2027-05-31 → 2027-06-07 (+7d) | 99d → 93d |
| 4 | **Bridge Works** |  | 2027-03-23 → 2027-03-30 (+7d) |  |
| 1 | **Guard Rail** |  | 2027-02-21 → 2027-03-01 (+8d) |  |
| CON-LEG101-PR-2280 | Material Delivery for Guard Rail |  | 2026-10-25 → 2026-11-01 (+7d) | 122.25d → 116.25d |
| CON-LEG101-PR-2290 | Staging Time for Guard Rail | 2027-01-25 → 2027-02-01 (+7d) | 2027-02-21 → 2027-03-01 (+8d) | 44d → 38d |
| 2 | **GRP Panel** |  | 2027-03-23 → 2027-03-30 (+7d) |  |
| CON-LEG101-PR-2310 | Material Fabrication for GRP Panel |  | 2026-11-03 → 2026-11-10 (+7d) | 134d → 128d |
| CON-LEG101-PR-2320 | Material Delivery for GRP Panel | 2027-02-23 → 2027-03-02 (+7d) | 2027-03-11 → 2027-03-18 (+7d) | 44d → 38d |
| CON-LEG101-PR-2330 | Staging Time for GRP Panel | 2027-03-13 → 2027-03-20 (+7d) | 2027-03-23 → 2027-03-30 (+7d) | 44d → 38d |
| 1 | **Construction** |  | 2028-04-18 → 2028-04-25 (+7d) |  |
| 1 | **Roads & Meduim Voltage** |  | 2027-06-19 → 2027-06-26 (+7d) |  |
| 1 | **Local – 01** |  | 2027-06-02 → 2027-06-09 (+7d) |  |
| 1 | **LOCAL - 01 Segment-01 (From 0+000 to 1+066)** |  | 2027-04-14 → 2027-04-21 (+7d) |  |
| 8 | **Electrical Works** |  | 2027-04-14 → 2027-04-21 (+7d) |  |
| CON-LEG101-LR-15000 | Approval of Subcontractor / Supplier / Consultant for Medium Voltage from SEC | 2026-10-21 → 2026-10-28 (+7d) | 2026-11-01 → 2026-11-08 (+7d) | -157d → -163d |
| CON-LEG101-LR-15010 | Approval Materials of Medium Voltage from SEC | 2026-11-02 → 2026-11-09 (+7d) | 2026-11-12 → 2026-11-19 (+7d) | -157d → -163d |
| CON-LEG101-LR-15030 | PO for Medium Voltage | 2026-11-14 → 2026-11-21 (+7d) | 2026-11-15 → 2026-11-22 (+7d) | -157d → -163d |
| CON-LEG101-LR-15020 | Testing Materials of Medium Voltage from SEC | 2027-01-25 → 2027-02-01 (+7d) | 2027-01-30 → 2027-02-06 (+7d) | -157d → -163d |
| 2 | **Medium Voltage** |  | 2027-04-14 → 2027-04-21 (+7d) |  |
| CON-LEG101-LR-6880 | Excavation for Medium Voltage trench [Local – 01 Segment-01] | 2027-03-13 → 2027-03-20 (+7d) | 2027-03-20 → 2027-03-27 (+7d) | -157d → -163d |
| CON-LEG101-LR-7060 | Installation of Medium Voltage Cables [Local – 01 Segment-01] | 2027-03-21 → 2027-03-28 (+7d) | 2027-03-28 → 2027-04-04 (+7d) | -92.45d → -96.65d |
| CON-LEG101-LR-7150 | Installation of Straight joints cables [Local – 01 Segment-01] | 2027-03-29 → 2027-04-05 (+7d) | 2027-03-30 → 2027-04-06 (+7d) | -92.45d → -96.65d |
| CON-LEG101-LR-7240 | Installation of Cable Termination for 13.8 kv 3Cx 500 mm², Al /XLPE/LLDPE [Local – 01 Segment-01] | 2027-03-31 → 2027-04-07 (+7d) | 2027-04-03 → 2027-04-10 (+7d) | -92.45d → -96.65d |
| CON-LEG101-LR-7330 | Installation of Medium Voltage Switchgears [Local – 01 Segment-01] | 2027-04-04 → 2027-04-11 (+7d) | 2027-04-11 → 2027-04-18 (+7d) | -92.45d → -96.65d |
| CON-LEG101-LR-7680 | Installation of Cable Termination [Local – 01 Segment-01] | 2027-04-12 → 2027-04-19 (+7d) | 2027-04-14 → 2027-04-21 (+7d) | -92.45d → -96.65d |
| 2 | **LOCAL - 01 Segment-02 (From 1+066 to 2+133)** |  | 2027-05-02 → 2027-05-09 (+7d) |  |
| 8 | **Electrical Works** |  | 2027-05-02 → 2027-05-09 (+7d) |  |
| 2 | **Medium Voltage** |  | 2027-05-02 → 2027-05-09 (+7d) |  |
| CON-LEG101-LR-6890 | Excavation for Medium Voltage trench [Local – 01 Segment-02] | 2027-03-21 → 2027-03-28 (+7d) | 2027-03-28 → 2027-04-04 (+7d) | -157d → -163d |
| CON-LEG101-LR-7070 | Installation of Medium Voltage Cables [Local – 01 Segment-02] | 2027-03-29 → 2027-04-05 (+7d) | 2027-04-05 → 2027-04-12 (+7d) | -89.45d → -93.65d |
| CON-LEG101-LR-7160 | Installation of Straight joints cables [Local – 01 Segment-02] | 2027-04-06 → 2027-04-13 (+7d) | 2027-04-11 → 2027-04-18 (+7d) | -89.45d → -93.65d |
| CON-LEG101-LR-7250 | Installation of Cable Termination for 13.8 kv 3Cx 500 mm², Al /XLPE/LLDPE [Local – 01 Segment-02] | 2027-04-15 → 2027-04-22 (+7d) | 2027-04-18 → 2027-04-25 (+7d) | -92.45d → -96.65d |
| CON-LEG101-LR-7340 | Installation of Medium Voltage Switchgears [Local – 01 Segment-02] | 2027-04-19 → 2027-04-26 (+7d) | 2027-04-26 → 2027-05-03 (+7d) | -92.45d → -96.65d |
| CON-LEG101-LR-7690 | Installation of Cable Termination [Local – 01 Segment-02] | 2027-04-27 → 2027-05-04 (+7d) | 2027-05-02 → 2027-05-09 (+7d) | -92.45d → -96.65d |
| 3 | **LOCAL - 01 Segment-03 (From 2+133 to 3+200)** |  | 2027-06-02 → 2027-06-09 (+7d) |  |
| 8 | **Electrical Works** |  | 2027-06-02 → 2027-06-09 (+7d) |  |
| 2 | **Medium Voltage** |  | 2027-06-02 → 2027-06-09 (+7d) |  |
| CON-LEG101-LR-6900 | Excavation for Medium Voltage trench [Local – 01 Segment-03] | 2027-05-03 → 2027-05-10 (+7d) | 2027-05-06 → 2027-05-13 (+7d) | -92.45d → -96.65d |
| CON-LEG101-LR-7080 | Installation of Medium Voltage Cables [Local – 01 Segment-03] | 2027-05-08 → 2027-05-19 (+11d) | 2027-05-19 → 2027-05-26 (+7d) | -92.45d → -96.65d |
| CON-LEG101-LR-7170 | Installation of Straight joints cables [Local – 01 Segment-03] | 2027-05-20 → 2027-05-27 (+7d) | 2027-05-22 → 2027-05-29 (+7d) | -92.45d → -96.65d |
| CON-LEG101-LR-7260 | Installation of Cable Termination for 13.8 kv 3Cx 500 mm², Al /XLPE/LLDPE [Local – 01 Segment-03] | 2027-05-23 → 2027-05-30 (+7d) | 2027-05-25 → 2027-06-01 (+7d) | -92.45d → -96.65d |
| CON-LEG101-LR-7350 | Installation of Medium Voltage Switchgears [Local – 01 Segment-03] | 2027-05-26 → 2027-06-02 (+7d) | 2027-05-30 → 2027-06-06 (+7d) | -92.45d → -96.65d |
| CON-LEG101-LR-7700 | Installation of Cable Termination [Local – 01 Segment-03] | 2027-05-31 → 2027-06-07 (+7d) | 2027-06-02 → 2027-06-09 (+7d) | -92.45d → -96.65d |
| 4 | **Local – 02** |  | 2027-05-22 → 2027-05-29 (+7d) |  |
| 8 | **Electrical Works** |  | 2027-05-22 → 2027-05-29 (+7d) |  |
| 2 | **Medium Voltage** |  | 2027-05-22 → 2027-05-29 (+7d) |  |
| CON-LEG101-LR-6910 | Excavation for Medium Voltage trench [Local – 02 ] | 2027-03-29 → 2027-04-05 (+7d) | 2027-04-06 → 2027-04-13 (+7d) | -157d → -163d |
| CON-LEG101-LR-7090 | Installation of Medium Voltage Cables [Local – 02 ] | 2027-04-07 → 2027-04-14 (+7d) | 2027-04-21 → 2027-04-28 (+7d) | -157d → -163d |
| CON-LEG101-LR-7180 | Installation of Straight joints cables [Local – 02 ] | 2027-04-22 → 2027-04-29 (+7d) | 2027-04-28 → 2027-05-05 (+7d) | -157d → -163d |
| CON-LEG101-LR-7270 | Installation of Cable Termination for 13.8 kv 3Cx 500 mm², Al /XLPE/LLDPE [Local – 02 ] | 2027-04-29 → 2027-05-06 (+7d) | 2027-05-08 → 2027-05-19 (+11d) | -157d → -163d |
| CON-LEG101-LR-7360 | Installation of Medium Voltage Switchgears [Local – 02 ] | 2027-05-09 → 2027-05-20 (+11d) | 2027-05-13 → 2027-05-25 (+12d) | -157d → -163d |
| CON-LEG101-LR-7710 | Installation of Cable Termination [Local – 02 ] | 2027-05-19 → 2027-05-26 (+7d) | 2027-05-22 → 2027-05-29 (+7d) | -157d → -163d |
| 2 | **Local – 03** |  | 2027-06-14 → 2027-06-21 (+7d) |  |
| 8 | **Electrical Works** |  | 2027-06-14 → 2027-06-21 (+7d) |  |
| 2 | **Medium Voltage** |  | 2027-06-14 → 2027-06-21 (+7d) |  |
| CON-LEG101-LR-6920 | Excavation for Medium Voltage trench [Local – 03 ] | 2027-05-23 → 2027-05-30 (+7d) | 2027-05-25 → 2027-06-01 (+7d) | -157d → -163d |
| CON-LEG101-LR-7100 | Installation of Medium Voltage Cables [Local – 03 ] | 2027-05-26 → 2027-06-02 (+7d) | 2027-05-31 → 2027-06-07 (+7d) | -102.45d → -106.65d |
| CON-LEG101-LR-7190 | Installation of Straight joints cables [Local – 03 ] | 2027-06-01 → 2027-06-08 (+7d) | 2027-06-02 → 2027-06-09 (+7d) | -102.45d → -106.65d |
| CON-LEG101-LR-7280 | Installation of Cable Termination for 13.8 kv 3Cx 500 mm², Al /XLPE/LLDPE [Local – 03 ] | 2027-06-03 → 2027-06-10 (+7d) | 2027-06-06 → 2027-06-13 (+7d) | -102.45d → -106.65d |
| CON-LEG101-LR-7370 | Installation of Medium Voltage Switchgears [Local – 03 ] | 2027-06-07 → 2027-06-14 (+7d) | 2027-06-10 → 2027-06-17 (+7d) | -102.45d → -106.65d |
| CON-LEG101-LR-7720 | Installation of Cable Termination [Local – 03 ] | 2027-06-12 → 2027-06-19 (+7d) | 2027-06-14 → 2027-06-21 (+7d) | -102.45d → -106.65d |
| 3 | **Local – 04** |  | 2027-06-19 → 2027-06-26 (+7d) |  |
| 7 | **Road Works** |  | 2027-01-17 → 2027-01-24 (+7d) |  |
| 1 | **Earthworks and Site Grading** |  | 2026-12-19 → 2026-12-26 (+7d) |  |
| CON-LEG101-LR-1800 | Excavation for Roadway [Local – 04 ] | 2026-11-08 → 2026-11-15 (+7d) | 2026-11-24 → 2026-12-01 (+7d) | -54.24d → -60.24d |
| CON-LEG101-LR-4420 | Embankments to the roads [Local – 04 ] | 2026-11-25 → 2026-12-02 (+7d) | 2026-12-19 → 2026-12-26 (+7d) | 16.55d → 12.35d |
| 2 | **Asphalt Work** | 2026-12-20 → 2026-12-27 (+7d) | 2027-01-17 → 2027-01-24 (+7d) |  |
| CON-LEG101-LR-5630 | Subgrade [Local – 04 ] | 2026-12-20 → 2026-12-27 (+7d) | 2027-01-02 → 2027-01-09 (+7d) | 16.55d → 12.35d |
| CON-LEG101-LR-5730 | Aggregate base course [Local – 04 ] | 2027-01-04 → 2027-01-11 (+7d) | 2027-01-12 → 2027-01-19 (+7d) | 15.55d → 11.35d |
| CON-LEG101-LR-5830 | Prime Coat (MC1) [Local – 04 ] | 2027-01-13 → 2027-01-20 (+7d) | 2027-01-14 → 2027-01-21 (+7d) | 15.55d → 11.35d |

| ID | Task | Start | Finish | Complete | Total float |
| --- | --- | --- | --- | --- | --- |
| CON-LEG101-LR-5930 | Bituminous Base Course [Local – 04 ] | 2027-01-16 → 2027-01-23 (+7d) | 2027-01-17 → 2027-01-24 (+7d) |  | 15.55d → 11.35d |
| 1 | **Electric Works** | 2027-05-23 → 2027-05-30 (+7d) | 2027-06-19 → 2027-06-26 (+7d) |  |  |
| 2 | **Medium Voltage** | 2027-05-23 → 2027-05-30 (+7d) | 2027-06-19 → 2027-06-26 (+7d) |  |  |
| CON-LEG101-LR-6930 | Excavation for Medium Voltage trench [Local – 04 ] | 2027-05-23 → 2027-05-30 (+7d) | 2027-05-26 → 2027-06-02 (+7d) |  | -157d → -163d |
| CON-LEG101-LR-7020 | Installation of Medium Voltage Cables Duct Banks [Local – 04 ] | 2027-05-27 → 2027-06-03 (+7d) | 2027-05-30 → 2027-06-06 (+7d) |  | -106.45d → -110.65d |
| CON-LEG101-LR-7110 | Installation of Medium Voltage Cables [Local – 04 ] | 2027-05-31 → 2027-06-07 (+7d) | 2027-06-06 → 2027-06-13 (+7d) |  | -106.45d → -110.65d |
| CON-LEG101-LR-7200 | Installation of Straight joints cables [Local – 04 ] | 2027-06-07 → 2027-06-14 (+7d) | 2027-06-09 → 2027-06-16 (+7d) |  | -106.45d → -110.65d |
| CON-LEG101-LR-7290 | Installation of Cable Termination for 13.8 kv 3Cx 500 mm², Al /XLPE/LLDPE [Local – 04 ] | 2027-06-10 → 2027-06-17 (+7d) | 2027-06-13 → 2027-06-20 (+7d) |  | -106.45d → -110.65d |
| CON-LEG101-LR-7380 | Installation of Medium Voltage Switchgears [Local – 04 ] | 2027-06-14 → 2027-06-21 (+7d) | 2027-06-15 → 2027-06-22 (+7d) |  | -106.45d → -110.65d |
| CON-LEG101-LR-7730 | Installation of Cable Termination [Local – 04 ] | 2027-06-16 → 2027-06-23 (+7d) | 2027-06-19 → 2027-06-26 (+7d) |  | -106.45d → -110.65d |
| 5 | **Local – 05** |  | 2027-06-13 → 2027-06-20 (+7d) |  |  |
| 8 | **Electrical Works** |  | 2027-06-13 → 2027-06-20 (+7d) |  |  |
| 2 | **Medium Voltage** |  | 2027-06-13 → 2027-06-20 (+7d) |  |  |
| CON-LEG101-LR-6940 | Excavation for Medium Voltage trench [Local – 05 ] | 2027-05-27 → 2027-06-03 (+7d) | 2027-05-31 → 2027-06-07 (+7d) |  | -101.45d → -105.65d |
| CON-LEG101-LR-7120 | Installation of Medium Voltage Cables [Local – 05 ] | 2027-06-01 → 2027-06-08 (+7d) | 2027-06-05 → 2027-06-12 (+7d) |  | -101.45d → -105.65d |
| CON-LEG101-LR-7210 | Installation of Straight joints cables [Local – 05 ] | 2027-06-06 → 2027-06-13 (+7d) | 2027-06-07 → 2027-06-14 (+7d) |  | -101.45d → -105.65d |
| CON-LEG101-LR-7300 | Installation of Cable Termination for 13.8 kv 3Cx 500 mm², Al /XLPE/LLDPE [Local – 05 ] | 2027-06-08 → 2027-06-15 (+7d) | 2027-06-09 → 2027-06-16 (+7d) |  | -101.45d → -105.65d |
| CON-LEG101-LR-7390 | Installation of Medium Voltage Switchgears [Local – 05 ] | 2027-06-10 → 2027-06-17 (+7d) | 2027-06-12 → 2027-06-19 (+7d) |  | -101.45d → -105.65d |
| CON-LEG101-LR-7740 | Installation of Cable Termination [Local – 05 ] | 2027-06-10 → 2027-06-17 (+7d) | 2027-06-13 → 2027-06-20 (+7d) |  | -101.45d → -105.65d |
| 6 | **Local – 06** |  | 2027-06-12 → 2027-06-19 (+7d) |  |  |
| 8 | **Electrical Works** |  | 2027-06-12 → 2027-06-19 (+7d) |  |  |
| 2 | **Medium Voltage** |  | 2027-06-12 → 2027-06-19 (+7d) |  |  |
| CON-LEG101-LR-6950 | Excavation for Medium Voltage trench [Local – 06 ] | 2027-05-29 → 2027-06-05 (+7d) | 2027-05-31 → 2027-06-07 (+7d) |  | -100.45d → -104.65d |
| CON-LEG101-LR-7130 | Installation of Medium Voltage Cables [Local – 06 ] | 2027-06-01 → 2027-06-08 (+7d) | 2027-06-03 → 2027-06-10 (+7d) |  | -100.45d → -104.65d |
| CON-LEG101-LR-7220 | Installation of Straight joints cables [Local – 06 ] | 2027-06-05 → 2027-06-12 (+7d) | 2027-06-06 → 2027-06-13 (+7d) |  | -100.45d → -104.65d |
| CON-LEG101-LR-7310 | Installation of Cable Termination for 13.8 kv 3Cx 500 mm², Al /XLPE/LLDPE [Local – 06 ] | 2027-06-07 → 2027-06-14 (+7d) | 2027-06-08 → 2027-06-15 (+7d) |  | -100.45d → -104.65d |
| CON-LEG101-LR-7400 | Installation of Medium Voltage Switchgears [Local – 06 ] | 2027-06-09 → 2027-06-16 (+7d) | 2027-06-10 → 2027-06-17 (+7d) |  | -100.45d → -104.65d |
| CON-LEG101-LR-7750 | Installation of Cable Termination [Local – 06 ] | 2027-06-09 → 2027-06-16 (+7d) | 2027-06-12 → 2027-06-19 (+7d) |  | -100.45d → -104.65d |
| 7 | **Local – 07** |  | 2027-06-10 → 2027-06-17 (+7d) |  |  |
| 7 | **Road Works** |  | 2026-11-25 → 2026-12-02 (+7d) |  |  |
| 1 | **Earthworks and Site Grading** |  | 2026-11-25 → 2026-12-02 (+7d) |  |  |
| CON-LEG101-LR-5070 | Embankments to the parcels for roads [Local – 07 ] |  | 2026-11-25 → 2026-12-02 (+7d) |  | 61.27d → 57.07d |
| 8 | **Electrical Works** |  | 2027-06-10 → 2027-06-17 (+7d) |  |  |
| 2 | **Medium Voltage** |  | 2027-06-10 → 2027-06-17 (+7d) |  |  |
| CON-LEG101-LR-6960 | Excavation for Medium Voltage trench [Local – 07 ] | 2027-05-29 → 2027-06-05 (+7d) | 2027-05-31 → 2027-06-07 (+7d) |  | -99.45d → -103.65d |
| CON-LEG101-LR-7140 | Installation of Medium Voltage Cables [Local – 07 ] | 2027-06-01 → 2027-06-08 (+7d) | 2027-06-03 → 2027-06-10 (+7d) |  | -99.45d → -103.65d |
| CON-LEG101-LR-7230 | Installation of Straight joints cables [Local – 07 ] | 2027-06-05 → 2027-06-12 (+7d) | 2027-06-06 → 2027-06-13 (+7d) |  | -99.45d → -103.65d |
| CON-LEG101-LR-7320 | Installation of Cable Termination for 13.8 kv 3Cx 500 mm², Al /XLPE/LLDPE [Local – 07 ] | 2027-06-07 → 2027-06-14 (+7d) | 2027-06-08 → 2027-06-15 (+7d) |  | -99.45d → -103.65d |
| CON-LEG101-LR-7410 | Installation of Medium Voltage Switchgears [Local – 07 ] | 2027-06-09 → 2027-06-16 (+7d) | 2027-06-10 → 2027-06-17 (+7d) |  | -99.45d → -103.65d |
| CON-LEG101-LR-7760 | Installation of Cable Termination [Local – 07 ] | 2027-06-09 → 2027-06-16 (+7d) | 2027-06-10 → 2027-06-17 (+7d) |  | -99.45d → -103.65d |
| 6 | **Deep Infrastructure network** |  | 2027-01-18 → 2027-01-25 (+7d) |  |  |
| 1 | **Local – 01** |  | 2026-11-12 → 2026-11-18 (+6d) |  |  |
| 1 | **LOCAL - 01 Segment-01 (From 0+000 to 1+066)** |  | 2026-11-11 → 2026-11-17 (+6d) |  |  |
| 1 | **Stormwater Utilities** |  | 2026-11-11 → 2026-11-17 (+6d) |  |  |
| 1 | **Manhole** |  | 2026-11-10 → 2026-11-16 (+6d) |  |  |
| CON-LEG101-LR-10920 | Finishing and Testing of Inlet Manholes [Local – 01 Segment-01] |  | 2026-11-10 → 2026-11-16 (+6d) | 85% → 90% | 74.3d → 70.85d |
| 3 | **Concrete Chambers/Outfalls** |  | 2026-11-11 → 2026-11-17 (+6d) |  |  |
| CON-LEG101-LR-10880 | FInishing and Testing of Concrete chambers [Local – 01 Segment-01] |  | 2026-11-11 → 2026-11-17 (+6d) | 85% → 90% | 83.6d → 80.65d |
| 4 | **Sanitary Sewerage** |  | 2026-11-08 → 2026-11-15 (+7d) |  |  |
| 1 | **Manhole** |  | 2026-11-08 → 2026-11-15 (+7d) |  |  |
| CON-LEG101-LR-3500 | Installation of Fiberglass Manholes [Local – 01 Segment-01] |  | 2026-11-08 → 2026-11-15 (+7d) |  | 24.55d → 20.35d |
| 2 | **LOCAL - 01 Segment-02 (From 1+066 to 2+133)** |  | 2026-11-12 → 2026-11-17 (+5d) |  |  |
| 1 | **Stormwater Utilities** |  | 2026-11-12 → 2026-11-17 (+5d) |  |  |
| 3 | **Concrete Chambers/Outfalls** |  | 2026-11-12 → 2026-11-17 (+5d) |  |  |
| CON-LEG101-LR-11030 | FInishing and Testing of Concrete chambers [Local – 01 Segment-02] |  | 2026-11-12 → 2026-11-17 (+5d) |  | 83.6d → 80.65d |
| 4 | **Sanitary Sewerage** |  | 2026-11-08 → 2026-11-15 (+7d) |  |  |
| 1 | **Manhole** |  | 2026-11-08 → 2026-11-15 (+7d) |  |  |
| CON-LEG101-LR-3510 | Installation of Fiberglass Manholes [Local – 01 Segment-02] |  | 2026-11-08 → 2026-11-15 (+7d) |  | 26.13d → 21.93d |
| 3 | **LOCAL - 01 Segment-03 (From 2+133 to 3+200)** |  | 2026-11-12 → 2026-11-18 (+6d) |  |  |
| 1 | **Stormwater Utilities** |  | 2026-11-12 → 2026-11-18 (+6d) |  |  |
| 1 | **Manhole** |  | 2026-11-08 → 2026-11-15 (+7d) |  |  |
| CON-LEG101-LR-11070 | Finishing and Testing of Inlet Manholes [Local – 01 Segment-03] |  | 2026-11-08 → 2026-11-15 (+7d) |  | 53.25d → 49.05d |
| 3 | **Concrete Chambers/Outfalls** |  | 2026-11-12 → 2026-11-18 (+6d) |  |  |
| CON-LEG101-LR-11130 | FInishing and Testing of Concrete chambers [Local – 01 Segment-03] |  | 2026-11-12 → 2026-11-18 (+6d) |  | 83.6d → 80.65d |
| 4 | **Sanitary Sewerage** |  | 2026-11-08 → 2026-11-15 (+7d) |  |  |
| 1 | **Manhole** |  | 2026-11-08 → 2026-11-15 (+7d) |  |  |
| CON-LEG101-LR-3520 | Installation of Fiberglass Manholes [Local – 01 Segment-03] |  | 2026-11-08 → 2026-11-15 (+7d) |  | 52.55d → 48.35d |
| 2 | **Local – 02** |  | 2026-11-12 → 2026-11-18 (+6d) |  |  |
| 1 | **Stormwater Utilities** |  | 2026-11-12 → 2026-11-18 (+6d) |  |  |
| 1 | **Manhole** |  | 2026-11-08 → 2026-11-15 (+7d) |  |  |

| ID | Task | Start | Finish | Total float |
| --- | --- | --- | --- | --- |
| CON-LEG101-LR-11180 | Finishing and Testing of Inlet Manholes [Local – 02 ] |  | 2026-11-08 → 2026-11-15 (+7d) | 75.75d → 71.55d |
| 3 | **Concrete Chambers/Outfalls** |  | 2026-11-12 → 2026-11-18 (+6d) |  |
| CON-LEG101-LR-11230 | FInishing and Testing of Concrete chambers [Local – 02 ] |  | 2026-11-12 → 2026-11-18 (+6d) | 83.6d → 80.65d |
| 4 | **Sanitary Sewerage** |  | 2026-11-08 → 2026-11-15 (+7d) |  |
| 1 | **Manhole** |  | 2026-11-08 → 2026-11-15 (+7d) |  |
| CON-LEG101-LR-3530 | Installation of Fiberglass Manholes [Local – 02 ] |  | 2026-11-08 → 2026-11-15 (+7d) | -40.24d → -46.24d |
| 3 | **Local – 03** |  | 2026-11-17 → 2026-11-22 (+5d) |  |
| 1 | **Stormwater Utilities** |  | 2026-11-17 → 2026-11-22 (+5d) |  |
| 1 | **Manhole** |  | 2026-11-15 → 2026-11-22 (+7d) |  |
| CON-LEG101-LR-11280 | Finishing and Testing of Inlet Manholes [Local – 03 ] |  | 2026-11-15 → 2026-11-22 (+7d) | 82.1d → 77.9d |
| 3 | **Concrete Chambers/Outfalls** |  | 2026-11-17 → 2026-11-22 (+5d) |  |
| CON-LEG101-LR-11340 | FInishing and Testing of Concrete chambers [Local – 03 ] |  | 2026-11-17 → 2026-11-22 (+5d) | 83.6d → 80.65d |
| 4 | **Local – 04** |  | 2027-01-17 → 2027-01-24 (+7d) |  |
| 1 | **Stormwater Utilities** |  | 2027-01-17 → 2027-01-24 (+7d) |  |
| 2 | **Pipe Work** |  | 2026-12-15 → 2026-12-22 (+7d) |  |
| CON-LEG101-LR-3930 | Testing for Stormwater Utilities Network [Local – 04 ] | 2026-11-25 → 2026-12-02 (+7d) | 2026-12-08 → 2026-12-15 (+7d) | -54.24d → -60.24d |
| CON-LEG101-LR-4140 | Installation of Micron Marker Magnetic Tape [Local – 04 ] | 2026-12-09 → 2026-12-16 (+7d) | 2026-12-10 → 2026-12-17 (+7d) | -54.24d → -60.24d |
| CON-LEG101-LR-4250 | Backfilling to Subgrade Elevation [Local – 04 ] | 2026-12-12 → 2026-12-19 (+7d) | 2026-12-15 → 2026-12-22 (+7d) | -54.24d → -60.24d |
| 1 | **Manhole** |  | 2026-12-23 → 2026-12-30 (+7d) |  |
| CON-LEG101-LR-4370 | Installation of Inlet Manholes [Local – 04 ] |  | 2026-11-29 → 2026-12-06 (+7d) | -46.24d → -52.24d |
| CON-LEG101-LR-11380 | Backfilling of Inlet Manholes [Local – 04 ] | 2026-11-30 → 2026-12-07 (+7d) | 2026-12-06 → 2026-12-13 (+7d) | -46.24d → -52.24d |
| CON-LEG101-LR-11390 | Finishing and Testing of Inlet Manholes [Local – 04 ] | 2026-12-07 → 2026-12-14 (+7d) | 2026-12-23 → 2026-12-30 (+7d) | 63.9d → 59.7d |
| 3 | **Concrete Chambers/Outfalls** | 2026-11-30 → 2026-12-07 (+7d) | 2027-01-17 → 2027-01-24 (+7d) |  |
| CON-LEG101-LR-11400 | Excavation of Concrete chambers [Local – 04 ] | 2026-11-30 → 2026-12-07 (+7d) | 2026-12-06 → 2026-12-13 (+7d) | 15.55d → 11.35d |
| CON-LEG101-LR-11410 | PC of Concrete chambers [Local – 04 ] | 2026-12-07 → 2026-12-14 (+7d) | 2026-12-08 → 2026-12-15 (+7d) | 15.55d → 11.35d |
| CON-LEG101-LR-4470 | Installation of Concrete chambers [Local – 04 ] | 2026-12-09 → 2026-12-16 (+7d) | 2026-12-20 → 2026-12-27 (+7d) | 15.55d → 11.35d |
| CON-LEG101-LR-11420 | Installation UPVC Pipes to Concrete chambers [Local – 04 ] | 2026-12-21 → 2026-12-28 (+7d) | 2026-12-27 → 2027-01-03 (+7d) | 15.55d → 11.35d |
| CON-LEG101-LR-11430 | Backfilling to Concrete chambers [Local – 04 ] | 2026-12-28 → 2027-01-04 (+7d) | 2027-01-03 → 2027-01-10 (+7d) | 15.55d → 11.35d |
| CON-LEG101-LR-11440 | FInishing and Testing of Concrete chambers [Local – 04 ] | 2027-01-04 → 2027-01-11 (+7d) | 2027-01-17 → 2027-01-24 (+7d) | 42.85d → 38.65d |
| 4 | **Sanitary Sewerage** |  | 2026-12-07 → 2026-12-14 (+7d) |  |
| 2 | **Pipe Work** |  | 2026-12-07 → 2026-12-14 (+7d) |  |
| CON-LEG101-LR-3180 | Concrete encasement, pipe dia 200 and 350 mm [Local – 04 ] | 2026-11-25 → 2026-12-02 (+7d) | 2026-11-28 → 2026-12-05 (+7d) | -47.24d → -53.24d |
| CON-LEG101-LR-3360 | Installation of Micron Marker Magnetic Tape [Local – 04 ] | 2026-11-29 → 2026-12-06 (+7d) | 2026-11-30 → 2026-12-07 (+7d) | -47.24d → -53.24d |
| CON-LEG101-LR-3450 | Backfilling to Subgrade Elevation [Local – 04 ] | 2026-12-01 → 2026-12-08 (+7d) | 2026-12-07 → 2026-12-14 (+7d) | -47.24d → -53.24d |
| 1 | **Manhole** |  | 2026-11-28 → 2026-12-05 (+7d) |  |
| CON-LEG101-LR-3540 | Installation of Fiberglass Manholes [Local – 04 ] |  | 2026-11-28 → 2026-12-05 (+7d) | -39.24d → -45.24d |
| 5 | **Local – 05** |  | 2026-11-25 → 2026-12-02 (+7d) |  |
| 4 | **Sanitary Sewerage** |  | 2026-11-25 → 2026-12-02 (+7d) |  |
| 1 | **Manhole** |  | 2026-11-25 → 2026-12-02 (+7d) |  |
| CON-LEG101-LR-3550 | Installation of Fiberglass Manholes [Local – 05 ] |  | 2026-11-25 → 2026-12-02 (+7d) | 45.65d → 41.45d |
| 8 | **Local – 08** |  | 2027-01-18 → 2027-01-25 (+7d) |  |
| 1 | **Stormwater Utilities** |  | 2027-01-18 → 2027-01-25 (+7d) |  |
| 1 | **Manhole** |  | 2026-12-24 → 2026-12-31 (+7d) |  |
| CON-LEG101-LR-11750 | Finishing and Testing of Inlet Manholes [Local – 08 ] |  | 2026-12-24 → 2026-12-31 (+7d) | 63.9d → 59.7d |
| 3 | **Concrete Chambers/Outfalls** |  | 2027-01-18 → 2027-01-25 (+7d) |  |
| CON-LEG101-LR-11800 | FInishing and Testing of Concrete chambers [Local – 08 ] |  | 2027-01-18 → 2027-01-25 (+7d) | 42.85d → 38.65d |
| 7 | **Shallow infrastructure network** |  | 2027-10-03 → 2027-10-10 (+7d) |  |
| 1 | **Local – 01** |  | 2027-07-27 → 2027-08-03 (+7d) |  |
| 1 | **LOCAL - 01 Segment-01 (From 0+000 to 1+066)** |  | 2027-07-25 → 2027-08-01 (+7d) |  |
| 1 | **Electrical Works** |  | 2027-06-30 → 2027-07-07 (+7d) |  |
| 3 | **Low Voltage** |  | 2027-06-30 → 2027-07-07 (+7d) |  |
| CON-LEG101-LR-7780 | Excavation works for Low Voltage Cables [Local – 01 Segment-01] |  | 2027-06-23 → 2027-06-30 (+7d) | -106.45d → -110.65d |
| CON-LEG101-LR-7880 | Installation of Low Voltage Cables [Local – 01 Segment-01] |  | 2027-06-28 → 2027-07-05 (+7d) | -81.4d → -85.6d |
| CON-LEG101-LR-8760 | Installation of Earthing System [Local – 01 Segment-01] |  | 2027-06-30 → 2027-07-07 (+7d) | 38.3d → 39.9d |
| 10 | **Telecommunications** |  | 2027-07-25 → 2027-08-01 (+7d) |  |
| CON-LEG101-LR-9330 | Installation of Reinforced concrete manhole [Local – 01 Segment-01] |  | 2027-07-25 → 2027-08-01 (+7d) | 17.15d → 18.75d |
| CON-LEG101-LR-9030 | Installation of Sand encased duct banks for secondary network [Local – 01 Segment-01] |  | 2027-07-05 → 2027-07-12 (+7d) | 17.15d → 18.75d |
| CON-LEG101-LR-9130 | Installation of Sand and soil encased duct banks, for combined network of primary and secondary [Local – 01 Segment-01 |  | 2027-07-14 → 2027-07-21 (+7d) | 17.15d → 18.75d |
| CON-LEG101-LR-9230 | Installation of Concrete encased duct banks for for combined network of primary and secondary [Local – 01 Segment-01] |  | 2027-07-22 → 2027-07-29 (+7d) | 17.15d → 18.75d |
| 11 | **CCTV feeding system and GSM** |  | 2027-07-07 → 2027-07-14 (+7d) |  |
| CON-LEG101-LR-8550 | Excavation works for Low Voltage Cables for CCTV feeding system and GSM [Local – 01 Segment-01] |  | 2027-06-23 → 2027-06-30 (+7d) | -106.45d → -110.65d |
| CON-LEG101-LR-9430 | Installation of Fiber Optic Patch Panel 12 port [Local – 01 Segment-01] |  | 2027-06-27 → 2027-07-04 (+7d) | 30.4d → 32d |
| CON-LEG101-LR-9450 | Installation of Modular Industrial Switches for main pole [Local – 01 Segment-01] |  | 2027-06-27 → 2027-07-04 (+7d) | 30.4d → 32d |
| CON-LEG101-LR-9460 | Installation of 8POE ports Industrial Switches for remote poles [Local – 01 Segment-01] |  | 2027-06-28 → 2027-07-05 (+7d) | 30.4d → 32d |
| CON-LEG101-LR-9520 | Installation of Core Switch [Local – 01 Segment-01] |  | 2027-06-28 → 2027-07-05 (+7d) | 30.4d → 32d |
| CON-LEG101-LR-9540 | Installation of Access Switch 48 port [Local – 01 Segment-01] |  | 2027-06-29 → 2027-07-06 (+7d) | 30.4d → 32d |
| CON-LEG101-LR-9560 | Installation of Server [Local – 01 Segment-01] |  | 2027-06-29 → 2027-07-06 (+7d) | 30.4d → 32d |
| CON-LEG101-LR-9590 | Installation of Stand rack 42U- 19" [Local – 01 Segment-01] |  | 2027-06-29 → 2027-07-06 (+7d) | 30.4d → 32d |
| CON-LEG101-LR-9610 | Installation of IP Outdoor CCTV POE Camera,5 MP, Metal Housing [Local – 01 Segment-01] |  | 2027-06-30 → 2027-07-07 (+7d) | 30.4d → 32d |
| CON-LEG101-LR-9690 | Installation of Outdoor PTZ IP66 [Local – 01 Segment-01] |  | 2027-06-30 → 2027-07-07 (+7d) | 30.4d → 32d |

| ID | Task | Start | Finish | Complete | Total float |
| --- | --- | --- | --- | --- | --- |
| CON-LEG101-LR-9850 | Installation of Horizontal Power Distribution Unit (min 8 outlets) [Local – 01 Segment-01] |  | 2027-07-07 → 2027-07-14 (+7d) |  | 30.4d → 32d |
| CON-LEG101-LR-9940 | Installation of Short Range wireless point to point wireless bridge [Local – 01 Segment-01] |  | 2027-07-07 → 2027-07-14 (+7d) |  | 30.4d → 32d |
| CON-LEG101-LR-8620 | Installation of Low Voltage Cables for CCTV feeding system and GSM [Local – 01 Segment-01] |  | 2027-06-26 → 2027-07-03 (+7d) |  | 30.4d → 32d |
| CON-LEG101-LR-9780 | Installation of Security workstation with 1 x 19" LED screen [Local – 01 Segment-01] | 2027-06-30 → 2027-07-07 (+7d) | 2027-07-01 → 2027-07-08 (+7d) |  | 30.4d → 32d |
| CON-LEG101-LR-9790 | Installation of LED Screen 43" (24/7 operation) with Ethernet decoders [Local – 01 Segment-01] | 2027-07-01 → 2027-07-08 (+7d) | 2027-07-04 → 2027-07-11 (+7d) |  | 30.4d → 32d |
| CON-LEG101-LR-9830 | Installation of Network Video Recorder 4k 64 Channel [Local – 01 Segment-01] | 2027-07-04 → 2027-07-11 (+7d) | 2027-07-05 → 2027-07-12 (+7d) |  | 30.4d → 32d |
| CON-LEG101-LR-9840 | Installation of Keypad [Local – 01 Segment-01] | 2027-07-05 → 2027-07-12 (+7d) | 2027-07-07 → 2027-07-14 (+7d) |  | 30.4d → 32d |
| 12 | **Earthing System** | 2027-07-07 → 2027-07-14 (+7d) | 2027-07-10 → 2027-07-17 (+7d) |  |  |
| CON-LEG101-LR-8280 | Installation of Earthing for Distribution panels,SL feeder pillars, KWH, Unit substations and RMU [Local – 01 Segment-01 | 2027-07-07 → 2027-07-14 (+7d) | 2027-07-10 → 2027-07-17 (+7d) |  | 30.4d → 32d |
| 9 | **Road Lighting** |  | 2027-07-21 → 2027-07-28 (+7d) |  |  |
| CON-LEG101-LR-8080 | Installation of Lighting poles [Local – 01 Segment-01] |  | 2027-06-21 → 2026-10-22 A (-242d) | 90% → 100% | -104.15d → none |
| CON-LEG101-LR-8180 | Installation of Street Lighting Luminaire [Local – 01 Segment-01] |  | 2027-06-22 → 2026-10-22 A (-243d) | 90% → 100% | -100.45d → none |
| CON-LEG101-LR-7420 | Installation of Unit Substation Including concrete foundations and fencing [Local – 01 Segment-01] |  | 2027-06-30 → 2027-07-07 (+7d) |  | -106.45d → -110.65d |
| CON-LEG101-LR-8430 | Installation of Street Lighting feeder pillars / Lighting panels [Local – 01 Segment-01] |  | 2027-06-23 → 2027-06-27 (+4d) |  | -100.45d → -103.55d |
| CON-LEG101-LR-8330 | Installation of Earthing for Streetlighting feeders for every end pole circuits. [Local – 01 Segment-01] |  | 2027-07-21 → 2027-07-28 (+7d) |  | -106.45d → -110.65d |
| CON-LEG101-LR-7500 | Installation of Ring Main Unit RMU [Local – 01 Segment-01] | 2027-06-30 → 2027-07-07 (+7d) | 2027-07-18 → 2027-07-25 (+7d) |  | -106.45d → -110.65d |
| 2 | **LOCAL - 01 Segment-02 (From 1+066 to 2+133)** |  | 2027-07-27 → 2027-08-03 (+7d) |  |  |
| 1 | **Electrical Works** |  | 2027-07-22 → 2027-07-29 (+7d) |  |  |
| 3 | **Low Voltage** |  | 2027-07-22 → 2027-07-29 (+7d) |  |  |
| CON-LEG101-LR-8770 | Installation of Earthing System [Local – 01 Segment-02] |  | 2027-07-22 → 2027-07-29 (+7d) |  | 19.75d → 21.35d |
| 12 | **Earthing System** |  | 2027-07-27 → 2027-08-03 (+7d) |  |  |
| CON-LEG101-LR-8290 | Installation of Earthing for Distribution panels,SL feeder pillars, KWH, Unit substations and RMU [Local – 01 Segment-02 |  | 2027-07-27 → 2027-08-03 (+7d) |  | -106.45d → -110.65d |
| 9 | **Road Lighting** |  | 2027-06-24 → 2027-06-29 (+5d) |  |  |
| CON-LEG101-LR-8340 | Installation of Earthing for Streetlighting feeders for every end pole circuits. [Local – 01 Segment-02] |  | 2027-06-24 → 2027-06-29 (+5d) |  | -100.45d → -103.55d |
| 3 | **LOCAL - 01 Segment-03 (From 2+133 to 3+200)** |  | 2027-06-30 → 2027-07-04 (+4d) |  |  |
| 5 | **TSE Network** |  | 2026-11-10 → 2026-11-17 (+7d) |  |  |
| 1 | **Valves/Chamber** |  | 2026-11-10 → 2026-11-17 (+7d) |  |  |
| CON-LEG101-LR-15040 | Installation of Air Valve chambers [Local – 01 Segment-03] |  | 2026-11-10 → 2026-11-17 (+7d) |  | 95.5d → 89.5d |
| CON-LEG101-LR-2630 | Installation of Wash out chambers [Local – 01 Segment-03] |  | 2026-11-09 → 2026-11-16 (+7d) |  | 95.5d → 89.5d |
| 6 | **Public Water Utility Distribution** |  | 2026-11-10 → 2026-11-17 (+7d) |  |  |
| 1 | **Valves/Chamber** |  | 2026-11-10 → 2026-11-17 (+7d) |  |  |
| CON-LEG101-LR-1270 | Installation of Air Valve chambers [Local – 01 Segment-03] |  | 2026-11-10 → 2026-11-17 (+7d) |  | 160d → 154d |
| CON-LEG101-LR-1230 | Installation of Wash out chambers [Local – 01 Segment-03] |  | 2026-11-09 → 2026-11-16 (+7d) |  | 160d → 154d |
| 10 | **Telecommunications** |  | 2027-06-17 → 2027-06-19 (+2d) |  |  |
| CON-LEG101-LR-9350 | Installation of Reinforced concrete manhole [Local – 01 Segment-03] |  | 2027-06-17 → 2027-06-19 (+2d) | 50% → 65% | -18.7d → -19.25d |
| CON-LEG101-LR-8850 | Installation of Sand and soil encased duct banks for primary network [Local – 01 Segment-03] |  | 2027-05-13 → 2027-05-25 (+12d) | 60% → 65% | -18.7d → -19.25d |
| CON-LEG101-LR-8950 | Installation of Concrete encased duct banks for primary network [Local – 01 Segment-03] |  | 2027-05-24 → 2027-05-30 (+6d) | 60% → 65% | -18.7d → -19.25d |
| CON-LEG101-LR-9050 | Installation of Sand encased duct banks for secondary network [Local – 01 Segment-03] |  | 2027-05-30 → 2027-06-03 (+4d) | 60% → 65% | -18.7d → -19.25d |
| CON-LEG101-LR-9150 | Installation of Sand and soil encased duct banks, for combined network of primary and secondary [Local – 01 Segment-03 |  | 2027-06-08 → 2027-06-12 (+4d) | 60% → 65% | -18.7d → -19.25d |
| 12 | **Earthing System** | 2027-06-17 → 2027-06-20 (+3d) | 2027-06-27 → 2027-06-29 (+2d) |  |  |
| CON-LEG101-LR-8300 | Installation of Earthing for Distribution panels,SL feeder pillars, KWH, Unit substations and RMU [Local – 01 Segment-03 | 2027-06-17 → 2027-06-20 (+3d) | 2027-06-27 → 2027-06-29 (+2d) |  | -18.7d → -20.7d |
| 9 | **Road Lighting** |  | 2027-06-30 → 2027-07-04 (+4d) |  |  |
| CON-LEG101-LR-8100 | Installation of Lighting poles [Local – 01 Segment-03] |  | 2027-05-09 → 2026-10-24 A (-197d) | 90% → 100% | -78.95d → none |
| CON-LEG101-LR-8200 | Installation of Street Lighting Luminaire [Local – 01 Segment-03] |  | 2027-05-10 → 2026-10-24 A (-198d) | 90% → 100% | -64.75d → none |
| CON-LEG101-LR-8450 | Installation of Street Lighting feeder pillars / Lighting panels [Local – 01 Segment-03] |  | 2027-06-13 → 2027-06-20 (+7d) |  | -90.15d → -96.15d |
| CON-LEG101-LR-8350 | Installation of Earthing for Streetlighting feeders for every end pole circuits. [Local – 01 Segment-03] |  | 2027-06-30 → 2027-07-04 (+4d) |  | -100.45d → -103.55d |
| 2 | **Local – 02** |  | 2027-07-07 → 2027-07-12 (+5d) |  |  |
| 5 | **TSE Network** |  | 2026-11-10 → 2026-11-17 (+7d) |  |  |
| 1 | **Valves/Chamber** |  | 2026-11-10 → 2026-11-17 (+7d) |  |  |
| CON-LEG101-LR-2410 | Installation of Wash out Valves [Local – 02 ] |  | 2026-11-10 → 2026-11-17 (+7d) |  | 43.1d → 37.1d |
| CON-LEG101-LR-2710 | Installation of Wash out chambers [Local – 02 ] |  | 2026-11-10 → 2026-11-17 (+7d) |  | 43.1d → 37.1d |
| 6 | **Public Water Utility Distribution** |  | 2026-11-11 → 2026-11-18 (+7d) |  |  |
| 1 | **Valves/Chamber** |  | 2026-11-11 → 2026-11-18 (+7d) |  |  |
| CON-LEG101-LR-15080 | Installation of Air Valve chambers [Local – 02 ] |  | 2026-11-10 → 2026-11-17 (+7d) |  | 69.65d → 63.65d |
| CON-LEG101-LR-1030 | Installation of Gate (Sluice) valves (Direct buried) [Local – 02 ] |  | 2026-11-11 → 2026-11-18 (+7d) |  | 69.65d → 63.65d |
| CON-LEG101-LR-15070 | Installation of Wash out chambers [Local – 02 ] |  | 2026-11-09 → 2026-11-16 (+7d) |  | 43.9d → 37.9d |
| 1 | **Electrical Works** |  | 2027-07-04 → 2027-07-11 (+7d) |  |  |
| 3 | **Low Voltage** |  | 2027-07-04 → 2027-07-11 (+7d) |  |  |
| CON-LEG101-LR-8490 | Installation of Low Voltage Distribution Panel [Local – 02 ] | 2027-06-13 → 2027-06-20 (+7d) | 2027-06-23 → 2027-06-30 (+7d) |  | -95.25d → -101.25d |
| CON-LEG101-LR-8540 | Installation of KWH Meters Walls [Local – 02 ] | 2027-06-24 → 2027-07-01 (+7d) | 2027-07-01 → 2027-07-08 (+7d) |  | 35d → 36.6d |
| CON-LEG101-LR-8790 | Installation of Earthing System [Local – 02 ] | 2027-07-03 → 2027-07-10 (+7d) | 2027-07-04 → 2027-07-11 (+7d) |  | 35d → 36.6d |
| 11 | **CCTV feeding system and GSM** |  | 2027-06-21 → 2027-06-28 (+7d) |  |  |
| CON-LEG101-LR-9470 | Installation of 8POE ports Industrial Switches for remote poles [Local – 02 ] |  | 2027-05-10 → 2027-05-22 (+12d) |  | -70.25d → -76.25d |
| CON-LEG101-LR-9570 | Installation of Server [Local – 02 ] |  | 2027-05-11 → 2027-05-23 (+12d) |  | -70.25d → -76.25d |
| CON-LEG101-LR-9640 | Installation of IP Outdoor CCTV POE Camera,5 MP, Metal Housing [Local – 02 ] |  | 2027-05-12 → 2027-05-24 (+12d) |  | -70.25d → -76.25d |
| CON-LEG101-LR-9720 | Installation of Outdoor PTZ IP66 [Local – 02 ] |  | 2027-05-12 → 2027-05-24 (+12d) |  | -70.25d → -76.25d |
| CON-LEG101-LR-9970 | Installation of Short Range wireless point to point wireless bridge [Local – 02 ] |  | 2027-06-21 → 2027-06-28 (+7d) |  | -92.95d → -98.95d |
| CON-LEG101-LR-9800 | Installation of LED Screen 43" (24/7 operation) with Ethernet decoders [Local – 02 ] | 2027-06-13 → 2027-06-20 (+7d) | 2027-06-20 → 2027-06-27 (+7d) |  | -92.95d → -98.95d |
| 12 | **Earthing System** | 2027-06-30 → 2027-07-05 (+5d) | 2027-07-07 → 2027-07-12 (+5d) |  |  |
| CON-LEG101-LR-8310 | Installation of Earthing for Distribution panels,SL feeder pillars, KWH, Unit substations and RMU [Local – 02 ] | 2027-06-30 → 2027-07-05 (+5d) | 2027-07-07 → 2027-07-12 (+5d) |  | -100.45d → -104.95d |

| ID | Task | Start | Finish | Total float |
| --- | --- | --- | --- | --- |
| 9 | **Road Lighting** |  | 2027-07-03 → 2027-07-08 (+5d) |  |
| CON-LEG101-LR-8460 | Installation of Street Lighting feeder pillars / Lighting panels [Local – 02 ] |  | 2027-06-28 → 2027-07-05 (+7d) | -98.95d → -104.95d |
| CON-LEG101-LR-8360 | Installation of Earthing for Streetlighting feeders for every end pole circuits. [Local – 02 ] |  | 2027-07-03 → 2027-07-08 (+5d) | -100.45d → -104.95d |
| CON-LEG101-LR-7430 | Installation of Unit Substation Including concrete foundations and fencing [Local – 02 ] | 2027-05-10 → 2027-05-22 (+12d) | 2027-05-22 → 2027-05-29 (+7d) | -80.95d → -86.95d |
| CON-LEG101-LR-7510 | Installation of Ring Main Unit RMU [Local – 02 ] | 2027-06-13 → 2027-06-20 (+7d) | 2027-06-27 → 2027-07-04 (+7d) | -98.95d → -104.95d |
| 3 | **Local – 03** |  | 2027-08-14 → 2027-08-21 (+7d) |  |
| 5 | **TSE Network** |  | 2026-11-12 → 2026-11-19 (+7d) |  |
| 1 | **Valves/Chamber** |  | 2026-11-12 → 2026-11-19 (+7d) |  |
| CON-LEG101-LR-2720 | Installation of Air Valve chambers [Local – 03 ] |  | 2026-11-12 → 2026-11-19 (+7d) | 43.1d → 37.1d |
| CON-LEG101-LR-2640 | Installation of Wash out chambers [Local – 03 ] |  | 2026-11-11 → 2026-11-18 (+7d) | 43.1d → 37.1d |
| 6 | **Public Water Utility Distribution** |  | 2026-11-14 → 2026-11-21 (+7d) |  |
| 1 | **Valves/Chamber** |  | 2026-11-14 → 2026-11-21 (+7d) |  |
| CON-LEG101-LR-15110 | Installation of Air Valve chambers [Local – 03 ] |  | 2026-11-14 → 2026-11-21 (+7d) | 43.1d → 37.1d |
| 1 | **Electrical Works** |  | 2027-06-26 → 2027-07-03 (+7d) |  |
| 3 | **Low Voltage** |  | 2027-06-26 → 2027-07-03 (+7d) |  |
| CON-LEG101-LR-7820 | Excavation works for Low Voltage Cables [Local – 03 ] | 2027-05-26 → 2027-06-02 (+7d) | 2027-06-08 → 2027-06-15 (+7d) | -111.55d → -117.55d |
| CON-LEG101-LR-7920 | Installation of Low Voltage Cables [Local – 03 ] | 2027-06-09 → 2027-06-16 (+7d) | 2027-06-22 → 2027-06-29 (+7d) | -111.55d → -117.55d |
| CON-LEG101-LR-8800 | Installation of Earthing System [Local – 03 ] | 2027-06-23 → 2027-06-30 (+7d) | 2027-06-26 → 2027-07-03 (+7d) | -111.55d → -117.55d |
| 10 | **Telecommunications** |  | 2027-07-20 → 2027-07-27 (+7d) |  |
| CON-LEG101-LR-8870 | Installation of Sand and soil encased duct banks for primary network [Local – 03 ] |  | 2027-06-22 → 2027-06-29 (+7d) | -108.45d → -114.45d |
| CON-LEG101-LR-9070 | Installation of Sand encased duct banks for secondary network [Local – 03 ] |  | 2027-07-01 → 2027-07-08 (+7d) | -111.55d → -117.55d |
| CON-LEG101-LR-9170 | Installation of Sand and soil encased duct banks, for combined network of primary and secondary [Local – 03 ] |  | 2027-07-15 → 2027-07-22 (+7d) | -111.55d → -117.55d |
| CON-LEG101-LR-9270 | Installation of Concrete encased duct banks for for combined network of primary and secondary [Local – 03 ] |  | 2027-07-20 → 2027-07-27 (+7d) | -111.55d → -117.55d |
| 11 | **CCTV feeding system and GSM** |  | 2027-07-08 → 2027-07-15 (+7d) |  |
| CON-LEG101-LR-9980 | Installation of Short Range wireless point to point wireless bridge [Local – 03 ] |  | 2027-07-08 → 2027-07-15 (+7d) | 16.8d → 18.4d |
| CON-LEG101-LR-8590 | Excavation works for Low Voltage Cables for CCTV feeding system and GSM [Local – 03 ] |  | 2027-07-03 → 2027-07-10 (+7d) | -7.9d → -6.3d |
| CON-LEG101-LR-8660 | Installation of Low Voltage Cables for CCTV feeding system and GSM [Local – 03 ] |  | 2027-07-05 → 2027-07-12 (+7d) | 16.8d → 18.4d |
| CON-LEG101-LR-9480 | Installation of 8POE ports Industrial Switches for remote poles [Local – 03 ] |  | 2027-07-05 → 2027-07-12 (+7d) | 16.8d → 18.4d |
| CON-LEG101-LR-9650 | Installation of IP Outdoor CCTV POE Camera,5 MP, Metal Housing [Local – 03 ] |  | 2027-07-06 → 2027-07-13 (+7d) | 16.8d → 18.4d |
| CON-LEG101-LR-9730 | Installation of Outdoor PTZ IP66 [Local – 03 ] |  | 2027-07-07 → 2027-07-14 (+7d) | 16.8d → 18.4d |
| 12 | **Earthing System** | 2027-08-05 → 2027-08-12 (+7d) | 2027-08-14 → 2027-08-21 (+7d) |  |
| CON-LEG101-LR-15170 | Installation of Earthing for Distribution panels,SL feeder pillars, KWH, Unit substations and RMU [Local – 03 ] | 2027-08-05 → 2027-08-12 (+7d) | 2027-08-14 → 2027-08-21 (+7d) | -7.9d → -6.3d |
| 9 | **Road Lighting** |  | 2027-08-05 → 2027-08-12 (+7d) |  |
| CON-LEG101-LR-8120 | Installation of Lighting poles [Local – 03 ] |  | 2027-06-17 → 2027-06-24 (+7d) | -96.5d → -102.5d |
| CON-LEG101-LR-7440 | Installation of Unit Substation Including concrete foundations and fencing [Local – 03 ] |  | 2027-07-12 → 2027-07-19 (+7d) | -7.9d → -6.3d |
| CON-LEG101-LR-8220 | Installation of Street Lighting Luminaire [Local – 03 ] |  | 2027-06-21 → 2027-06-28 (+7d) | 2d → 3.6d |
| CON-LEG101-LR-7520 | Installation of Ring Main Unit RMU [Local – 03 ] | 2027-07-12 → 2027-07-19 (+7d) | 2027-07-29 → 2027-08-05 (+7d) | -7.9d → -6.3d |
| CON-LEG101-LR-8370 | Installation of Earthing for Streetlighting feeders for every end pole circuits. [Local – 03 ] | 2027-07-29 → 2027-08-05 (+7d) | 2027-08-05 → 2027-08-12 (+7d) | -7.9d → -6.3d |
| 4 | **Local – 04** |  | 2027-10-03 → 2027-10-10 (+7d) |  |
| 5 | **TSE Network** |  | 2027-04-27 → 2027-05-04 (+7d) |  |
| 2 | **Pipe Work** |  | 2027-01-17 → 2027-01-24 (+7d) |  |
| CON-LEG101-LR-1350 | Excavation for TSE Network [Local – 04 ] |  | 2026-12-17 → 2026-12-24 (+7d) | -54.24d → -60.24d |
| CON-LEG101-LR-1470 | Granular bedding for TSE Network [Local – 04 ] |  | 2026-12-19 → 2026-12-26 (+7d) | -54.24d → -60.24d |
| CON-LEG101-LR-1580 | Installation of Pipe for TSE Network [Local – 04 ] |  | 2026-12-26 → 2027-01-02 (+7d) | -54.24d → -60.24d |
| CON-LEG101-LR-1910 | Granular Surround for TSE Network [Local – 04 ] |  | 2027-01-09 → 2027-01-16 (+7d) | -54.24d → -60.24d |
| CON-LEG101-LR-2020 | Installation of Micron Marker Magnetic Tape [Local – 04 ] |  | 2027-01-10 → 2027-01-17 (+7d) | -54.24d → -60.24d |
| CON-LEG101-LR-2130 | Backfilling to Subgrade Elevation [Local – 04 ] |  | 2027-01-17 → 2027-01-24 (+7d) | -54.24d → -60.24d |
| CON-LEG101-LR-1690 | Testing for TSE Network [Local – 04 ] | 2026-12-26 → 2027-01-02 (+7d) | 2027-01-02 → 2027-01-09 (+7d) | -54.24d → -60.24d |
| CON-LEG101-LR-1810 | Concrete encasement, pipe dia 110 mm [Local – 04 ] | 2027-01-02 → 2027-01-09 (+7d) | 2027-01-05 → 2027-01-12 (+7d) | -54.24d → -60.24d |
| 1 | **Valves/Chamber** | 2027-01-10 → 2027-01-17 (+7d) | 2027-04-27 → 2027-05-04 (+7d) |  |
| CON-LEG101-LR-2730 | Installation of Air Valve chambers [Local – 04 ] | 2027-01-10 → 2027-01-17 (+7d) | 2027-02-03 → 2027-02-15 (+12d) | -38.48d → -44.48d |
| CON-LEG101-LR-15060 | Installation of Wash-out Valve chambers [Local – 04 ] | 2027-02-03 → 2027-02-15 (+12d) | 2027-03-06 → 2027-03-13 (+7d) | -38.48d → -44.48d |
| CON-LEG101-LR-2240 | Installation of Gate (Sluice) valves (Direct buried) [Local – 04 ] | 2027-02-03 → 2027-02-15 (+12d) | 2027-02-18 → 2027-02-27 (+9d) | -26.48d → -32.48d |
| CON-LEG101-LR-2350 | Installation of Wash-out Valves [Local – 04 ] | 2027-03-06 → 2027-03-13 (+7d) | 2027-03-23 → 2027-03-30 (+7d) | -38.48d → -44.48d |
| CON-LEG101-LR-2430 | Installation of Air Valves [Local – 04 ] | 2027-03-23 → 2027-03-30 (+7d) | 2027-04-10 → 2027-04-17 (+7d) | -38.48d → -44.48d |
| CON-LEG101-LR-2510 | Installation of Fire Hydrant [Local – 04 ] | 2027-04-10 → 2027-04-17 (+7d) | 2027-04-27 → 2027-05-04 (+7d) | -38.48d → -44.48d |
| 6 | **Public Water Utility Distribution** |  | 2027-04-12 → 2027-04-19 (+7d) |  |
| 2 | **Pipe Work** |  | 2027-01-17 → 2027-01-24 (+7d) |  |
| CON-LEG101-LR-10090 | Excavation for Public Water Utility Distribution Piping [Local – 04 ] |  | 2026-12-19 → 2026-12-26 (+7d) | -54.2d → -60.2d |
| CON-LEG101-LR-10190 | Granular bedding for Public Water Utility Distribution Piping [Local – 04 ] |  | 2026-12-20 → 2026-12-27 (+7d) | -54.2d → -60.2d |
| CON-LEG101-LR-10290 | Installation of Pipe for Public Water Utility Distribution Piping [Local – 04 ] |  | 2026-12-27 → 2027-01-03 (+7d) | -54.2d → -60.2d |
| CON-LEG101-LR-10590 | Granular Surround for Public Water Utility Distribution Piping [Local – 04 ] |  | 2027-01-09 → 2027-01-16 (+7d) | -54.2d → -60.2d |
| CON-LEG101-LR-10390 | Testing for Public Water Utility Distribution Piping [Local – 04 ] | 2026-12-27 → 2027-01-03 (+7d) | 2027-01-02 → 2027-01-09 (+7d) | -54.2d → -60.2d |
| CON-LEG101-LR-10490 | Concrete encasement, pipe dia 110 mm [Local – 04 ] | 2027-01-02 → 2027-01-09 (+7d) | 2027-01-05 → 2027-01-12 (+7d) | -54.2d → -60.2d |
| CON-LEG101-LR-10690 | Installation of Micron Marker Magnetic Tape [Local – 04 ] | 2027-01-09 → 2027-01-16 (+7d) | 2027-01-12 → 2027-01-19 (+7d) | -54.2d → -60.2d |
| CON-LEG101-LR-10790 | Backfilling to Subgrade Elevation [Local – 04 ] | 2027-01-12 → 2027-01-19 (+7d) | 2027-01-17 → 2027-01-24 (+7d) | -54.2d → -60.2d |
| 1 | **Valves/Chamber** | 2027-03-06 → 2027-03-13 (+7d) | 2027-04-12 → 2027-04-19 (+7d) |  |
| CON-LEG101-LR-1280 | Installation of Air Valve chambers [Local – 04 ] | 2027-03-06 → 2027-03-13 (+7d) | 2027-03-29 → 2027-04-05 (+7d) | 60.52d → 54.52d |
| CON-LEG101-LR-1050 | Installation of Gate (Sluice) valves (Direct buried) [Local – 04 ] | 2027-03-29 → 2027-04-05 (+7d) | 2027-04-05 → 2027-04-12 (+7d) | 60.52d → 54.52d |
| CON-LEG101-LR-1180 | Installation of Air Valves [Local – 04 ] | 2027-04-05 → 2027-04-12 (+7d) | 2027-04-12 → 2027-04-19 (+7d) | 60.52d → 54.52d |

| ID | Task | Start | Finish | Total float |
| --- | --- | --- | --- | --- |
| 8 | **Electrical Works** | 2027-05-27 → 2027-06-03 (+7d) | 2027-07-11 → 2027-07-18 (+7d) |  |
| 3 | **Low Voltage** | 2027-05-27 → 2027-06-03 (+7d) | 2027-07-11 → 2027-07-18 (+7d) |  |
| CON-LEG101-LR-7830 | Excavation works for Low Voltage Cables [Local – 04 ] | 2027-05-27 → 2027-06-03 (+7d) | 2027-06-10 → 2027-06-17 (+7d) | -157d → -163d |
| CON-LEG101-LR-8030 | Installation of Low Voltage Cables Duct Banks [Local – 04 ] | 2027-06-12 → 2027-06-19 (+7d) | 2027-06-22 → 2027-06-29 (+7d) | -157d → -163d |
| CON-LEG101-LR-7930 | Installation of Low Voltage Cables [Local – 04 ] | 2027-06-23 → 2027-06-30 (+7d) | 2027-07-07 → 2027-07-14 (+7d) | -96d → -102d |
| CON-LEG101-LR-8810 | Installation of Earthing System [Local – 04 ] | 2027-07-08 → 2027-07-15 (+7d) | 2027-07-11 → 2027-07-18 (+7d) | -41d → -39.4d |
| 10 | **Telecommunications** | 2027-06-23 → 2027-06-30 (+7d) | 2027-09-16 → 2027-09-25 (+9d) |  |
| CON-LEG101-LR-8880 | Installation of Sand and soil encased duct banks for primary network [Local – 04 ] | 2027-06-23 → 2027-06-30 (+7d) | 2027-07-12 → 2027-07-19 (+7d) | -157d → -163d |
| CON-LEG101-LR-8980 | Installation of Concrete encased duct banks for primary network [Local – 04 ] | 2027-07-13 → 2027-07-20 (+7d) | 2027-07-19 → 2027-07-26 (+7d) | -157d → -163d |
| CON-LEG101-LR-9080 | Installation of Sand encased duct banks for secondary network [Local – 04 ] | 2027-07-20 → 2027-07-27 (+7d) | 2027-07-27 → 2027-08-03 (+7d) | -157d → -163d |
| CON-LEG101-LR-9180 | Installation of Sand and soil encased duct banks, for combined network of primary and secondary [Local – 04 ] | 2027-07-28 → 2027-08-04 (+7d) | 2027-08-17 → 2027-08-24 (+7d) | -157d → -163d |
| CON-LEG101-LR-9280 | Installation of Concrete encased duct banks for for combined network of primary and secondary [Local – 04 ] | 2027-08-18 → 2027-08-25 (+7d) | 2027-08-23 → 2027-08-30 (+7d) | -157d → -163d |
| CON-LEG101-LR-9380 | Installation of Reinforced concrete manhole [Local – 04 ] | 2027-08-24 → 2027-08-31 (+7d) | 2027-09-16 → 2027-09-25 (+9d) | -157d → -163d |
| 11 | **CCTV feeding system and GSM** | 2027-07-13 → 2027-07-20 (+7d) | 2027-09-22 → 2027-09-30 (+8d) |  |
| CON-LEG101-LR-8600 | Excavation works for Low Voltage Cables for CCTV feeding system and GSM [Local – 04 ] | 2027-07-13 → 2027-07-20 (+7d) | 2027-07-26 → 2027-08-02 (+7d) | -42d → -40.4d |
| CON-LEG101-LR-8670 | Installation of Low Voltage Cables for CCTV feeding system and GSM [Local – 04 ] | 2027-07-27 → 2027-08-03 (+7d) | 2027-08-10 → 2027-08-17 (+7d) | -42d → -40.4d |
| CON-LEG101-LR-9490 | Installation of 8POE ports Industrial Switches for remote poles [Local – 04 ] | 2027-08-11 → 2027-08-18 (+7d) | 2027-08-18 → 2027-08-25 (+7d) | -42d → -40.4d |
| CON-LEG101-LR-9660 | Installation of IP Outdoor CCTV POE Camera,5 MP, Metal Housing [Local – 04 ] | 2027-08-19 → 2027-08-26 (+7d) | 2027-08-28 → 2027-09-04 (+7d) | -42d → -40.4d |
| CON-LEG101-LR-9740 | Installation of Outdoor PTZ IP66 [Local – 04 ] | 2027-08-29 → 2027-09-05 (+7d) | 2027-09-08 → 2027-09-15 (+7d) | -42d → -40.4d |
| CON-LEG101-LR-9990 | Installation of Short Range wireless point to point wireless bridge [Local – 04 ] | 2027-09-09 → 2027-09-16 (+7d) | 2027-09-22 → 2027-09-30 (+8d) | -42d → -40.4d |
| 12 | **Earthing System** | 2027-09-25 → 2027-10-02 (+7d) | 2027-10-03 → 2027-10-10 (+7d) |  |
| CON-LEG101-LR-15160 | Installation of Earthing for Distribution panels,SL feeder pillars, KWH, Unit substations and RMU [Local – 04 ] | 2027-09-25 → 2027-10-02 (+7d) | 2027-10-03 → 2027-10-10 (+7d) | -42d → -40.4d |
| 9 | **Road Lighting** | 2027-06-17 → 2027-06-24 (+7d) | 2027-08-26 → 2027-09-02 (+7d) |  |
| CON-LEG101-LR-8130 | Installation of Lighting poles [Local – 04 ] | 2027-06-17 → 2027-06-24 (+7d) | 2027-07-08 → 2027-07-15 (+7d) | -96.5d → -102.5d |
| CON-LEG101-LR-8230 | Installation of Street Lighting Luminaire [Local – 04 ] | 2027-07-08 → 2027-07-15 (+7d) | 2027-07-15 → 2027-07-22 (+7d) | -9.5d → -7.9d |
| CON-LEG101-LR-7450 | Installation of Unit Substation Including concrete foundations and fencing [Local – 04 ] | 2027-07-27 → 2027-08-03 (+7d) | 2027-08-03 → 2027-08-10 (+7d) | -19d → -17.4d |
| CON-LEG101-LR-7530 | Installation of Ring Main Unit RMU [Local – 04 ] | 2027-08-04 → 2027-08-11 (+7d) | 2027-08-19 → 2027-08-26 (+7d) | -19d → -17.4d |
| CON-LEG101-LR-8380 | Installation of Earthing for Streetlighting feeders for every end pole circuits. [Local – 04 ] | 2027-08-21 → 2027-08-28 (+7d) | 2027-08-26 → 2027-09-02 (+7d) | -19d → -17.4d |
| 5 | **Local – 05** |  | 2027-07-26 → 2027-08-02 (+7d) |  |
| 5 | **TSE Network** |  | 2026-11-28 → 2026-12-05 (+7d) |  |
| 1 | **Valves/Chamber** |  | 2026-11-28 → 2026-12-05 (+7d) |  |
| CON-LEG101-LR-2740 | Installation of Air Valve chambers [Local – 05 ] |  | 2026-11-28 → 2026-12-05 (+7d) | 171.84d → 165.84d |
| CON-LEG101-LR-2660 | Installation of Wash out chambers [Local – 05 ] |  | 2026-11-26 → 2026-12-03 (+7d) | 171.84d → 165.84d |
| 6 | **Public Water Utility Distribution** |  | 2026-11-29 → 2026-12-06 (+7d) |  |
| 1 | **Valves/Chamber** |  | 2026-11-29 → 2026-12-06 (+7d) |  |
| CON-LEG101-LR-1240 | Installation of Wash out chambers [Local – 05 ] |  | 2026-11-29 → 2026-12-06 (+7d) | 212.84d → 214.44d |
| 1 | **Electrical Works** |  | 2027-06-02 → 2027-06-09 (+7d) |  |
| 3 | **Low Voltage** |  | 2027-06-02 → 2027-06-09 (+7d) |  |
| CON-LEG101-LR-8820 | Installation of Earthing System [Local – 05 ] | 2027-06-01 → 2027-06-08 (+7d) | 2027-06-02 → 2027-06-09 (+7d) | 19d → 13d |
| 10 | **Telecommunications** |  | 2027-06-14 → 2027-06-21 (+7d) |  |
| CON-LEG101-LR-9390 | Installation of Reinforced concrete manhole [Local – 05 ] |  | 2027-06-14 → 2027-06-21 (+7d) | 10.2d → 4.2d |
| CON-LEG101-LR-9090 | Installation of Sand encased duct banks for secondary network [Local – 05 ] |  | 2027-06-06 → 2027-06-13 (+7d) | 10.2d → 4.2d |
| CON-LEG101-LR-9190 | Installation of Sand and soil encased duct banks, for combined network of primary and secondary [Local – 05 ] |  | 2027-06-13 → 2027-06-20 (+7d) | 10.2d → 4.2d |
| 11 | **CCTV feeding system and GSM** |  | 2027-06-21 → 2027-06-28 (+7d) |  |
| CON-LEG101-LR-10000 | Installation of Short Range wireless point to point wireless bridge [Local – 05 ] |  | 2027-06-21 → 2027-06-28 (+7d) | 44d → 45.6d |
| CON-LEG101-LR-8610 | Excavation works for Low Voltage Cables for CCTV feeding system and GSM [Local – 05 ] |  | 2027-06-01 → 2027-06-08 (+7d) | 48.7d → 50.3d |
| CON-LEG101-LR-8680 | Installation of Low Voltage Cables for CCTV feeding system and GSM [Local – 05 ] |  | 2027-06-01 → 2027-06-08 (+7d) | 52.6d → 54.2d |
| CON-LEG101-LR-9440 | Installation of Fiber Optic Patch Panel 12 port [Local – 05 ] |  | 2027-06-02 → 2027-06-09 (+7d) | 52.6d → 54.2d |
| CON-LEG101-LR-9500 | Installation of 8POE ports Industrial Switches for remote poles [Local – 05 ] |  | 2027-06-02 → 2027-06-09 (+7d) | 52.6d → 54.2d |
| CON-LEG101-LR-9530 | Installation of Core Switch [Local – 05 ] |  | 2027-06-03 → 2027-06-10 (+7d) | 52.6d → 54.2d |
| CON-LEG101-LR-9550 | Installation of Access Switch 48 port [Local – 05 ] |  | 2027-06-03 → 2027-06-10 (+7d) | 52.6d → 54.2d |
| CON-LEG101-LR-9580 | Installation of Server [Local – 05 ] |  | 2027-06-05 → 2027-06-12 (+7d) | 52.6d → 54.2d |
| CON-LEG101-LR-9670 | Installation of IP Outdoor CCTV POE Camera,5 MP, Metal Housing [Local – 05 ] |  | 2027-06-19 → 2027-06-26 (+7d) | 44d → 45.6d |
| CON-LEG101-LR-9750 | Installation of Outdoor PTZ IP66 [Local – 05 ] |  | 2027-06-19 → 2027-06-26 (+7d) | 44d → 45.6d |
| CON-LEG101-LR-9860 | Installation of Horizontal Power Distribution Unit (min 8 outlets) [Local – 05 ] |  | 2027-06-21 → 2027-06-28 (+7d) | 44d → 45.6d |
| CON-LEG101-LR-9600 | Installation of Stand rack 42U- 19" [Local – 05 ] | 2027-06-14 → 2027-06-21 (+7d) | 2027-06-17 → 2027-06-24 (+7d) | 44d → 45.6d |
| CON-LEG101-LR-9810 | Installation of LED Screen 43" (24/7 operation) with Ethernet decoders [Local – 05 ] | 2027-06-19 → 2027-06-26 (+7d) | 2027-06-21 → 2027-06-28 (+7d) | 44d → 45.6d |
| 12 | **Earthing System** | 2027-07-22 → 2027-07-29 (+7d) | 2027-07-25 → 2027-08-01 (+7d) |  |
| CON-LEG101-LR-15150 | Installation of Earthing for Distribution panels,SL feeder pillars, KWH, Unit substations and RMU [Local – 05 ] | 2027-07-22 → 2027-07-29 (+7d) | 2027-07-25 → 2027-08-01 (+7d) | 17.6d → 19.2d |
| 9 | **Road Lighting** |  | 2027-07-26 → 2027-08-02 (+7d) |  |
| CON-LEG101-LR-7460 | Installation of Unit Substation Including concrete foundations and fencing [Local – 05 ] |  | 2027-07-14 → 2027-07-21 (+7d) | 16.6d → 18.2d |
| CON-LEG101-LR-8390 | Installation of Earthing for Streetlighting feeders for every end pole circuits. [Local – 05 ] |  | 2027-07-26 → 2027-08-02 (+7d) | 16.6d → 18.2d |
| CON-LEG101-LR-7540 | Installation of Ring Main Unit RMU [Local – 05 ] | 2027-07-14 → 2027-07-21 (+7d) | 2027-07-22 → 2027-07-29 (+7d) | 16.6d → 18.2d |
| 6 | **Local – 06** |  | 2027-07-20 → 2027-07-27 (+7d) |  |
| 10 | **Telecommunications** |  | 2027-06-02 → 2027-06-09 (+7d) |  |
| CON-LEG101-LR-9100 | Installation of Sand encased duct banks for secondary network [Local – 06 ] |  | 2027-06-01 → 2027-06-08 (+7d) | 40.05d → 34.55d |
| CON-LEG101-LR-9200 | Installation of Sand and soil encased duct banks, for combined network of primary and secondary [Local – 06 ] |  | 2027-06-02 → 2027-06-09 (+7d) | 40.05d → 34.55d |
| 11 | **CCTV feeding system and GSM** |  | 2027-06-02 → 2027-06-09 (+7d) |  |
| CON-LEG101-LR-10010 | Installation of Short Range wireless point to point wireless bridge [Local – 06 ] |  | 2027-06-02 → 2027-06-09 (+7d) | 59.2d → 60.8d |
| CON-LEG101-LR-9510 | Installation of 8POE ports Industrial Switches for remote poles [Local – 06 ] |  | 2027-06-01 → 2027-06-08 (+7d) |  |

| ID | Task | Start | Finish | Complete | Total float |
| --- | --- | --- | --- | --- | --- |
| CON-LEG101-LR-9680 | Installation of IP Outdoor CCTV POE Camera,5 MP, Metal Housing [Local – 06 ] |  | 2027-06-02 → 2027-06-09 (+7d) |  | 59.2d → 60.8d |
| CON-LEG101-LR-9760 | Installation of Outdoor PTZ IP66 [Local – 06 ] |  | 2027-06-02 → 2027-06-09 (+7d) |  | 59.2d → 60.8d |
| 12 | **Earthing System** | 2027-07-17 → 2027-07-24 (+7d) | 2027-07-20 → 2027-07-27 (+7d) |  |  |
| CON-LEG101-LR-15140 | Installation of Earthing for Distribution panels,SL feeder pillars, KWH, Unit substations and RMU [Local – 06 ] | 2027-07-17 → 2027-07-24 (+7d) | 2027-07-20 → 2027-07-27 (+7d) |  | 21.7d → 23.3d |
| 9 | **Road Lighting** |  | 2027-07-19 → 2027-07-26 (+7d) |  |  |
| CON-LEG101-LR-7470 | Installation of Unit Substation Including concrete foundations and fencing [Local – 06 ] |  | 2027-07-12 → 2027-07-19 (+7d) |  |  |
| CON-LEG101-LR-8400 | Installation of Earthing for Streetlighting feeders for every end pole circuits. [Local – 06 ] |  | 2027-07-19 → 2027-07-26 (+7d) |  | 22.6d → 24.2d |
| CON-LEG101-LR-7550 | Installation of Ring Main Unit RMU [Local – 06 ] | 2027-07-12 → 2027-07-19 (+7d) | 2027-07-17 → 2027-07-24 (+7d) |  | 21.7d → 23.3d |
| 7 | **Local – 07** |  | 2027-07-21 → 2027-07-28 (+7d) |  |  |
| 11 | **CCTV feeding system and GSM** |  | 2027-06-01 → 2027-06-08 (+7d) |  |  |
| CON-LEG101-LR-10020 | Installation of Short Range wireless point to point wireless bridge [Local – 07 ] |  | 2027-06-01 → 2027-06-08 (+7d) |  | 52.1d → 53.7d |
| 12 | **Earthing System** | 2027-07-17 → 2027-07-24 (+7d) | 2027-07-21 → 2027-07-28 (+7d) |  |  |
| CON-LEG101-LR-15130 | Installation of Earthing for Distribution panels,SL feeder pillars, KWH, Unit substations and RMU [Local – 07 ] | 2027-07-17 → 2027-07-24 (+7d) | 2027-07-21 → 2027-07-28 (+7d) |  | 20.3d → 21.9d |
| 9 | **Road Lighting** |  | 2027-07-19 → 2027-07-26 (+7d) |  |  |
| CON-LEG101-LR-7480 | Installation of Unit Substation Including concrete foundations and fencing [Local – 07 ] |  | 2027-07-12 → 2027-07-19 (+7d) |  | 20.3d → 21.9d |
| CON-LEG101-LR-8410 | Installation of Earthing for Streetlighting feeders for every end pole circuits. [Local – 07 ] |  | 2027-07-19 → 2027-07-26 (+7d) |  | 22.3d → 23.9d |
| CON-LEG101-LR-7560 | Installation of Ring Main Unit RMU [Local – 07 ] | 2027-07-12 → 2027-07-19 (+7d) | 2027-07-17 → 2027-07-24 (+7d) |  | 20.3d → 21.9d |
| 8 | **Local – 08** |  | 2027-07-20 → 2027-07-26 (+6d) |  |  |
| 5 | **TSE Network** |  | 2026-11-28 → 2026-12-05 (+7d) |  |  |
| 1 | **Valves/Chamber** |  | 2026-11-28 → 2026-12-05 (+7d) |  |  |
| CON-LEG101-LR-2750 | Installation of Air Valve chambers [Local – 08 ] |  | 2026-11-28 → 2026-12-05 (+7d) |  | 201d → 200d |
| CON-LEG101-LR-2670 | Installation of Wash out chambers [Local – 08 ] |  | 2026-11-26 → 2026-12-03 (+7d) |  | 201d → 200d |
| 1 | **Electrical Works** |  | 2027-06-20 → 2027-06-27 (+7d) |  |  |
| 3 | **Low Voltage** |  | 2027-06-20 → 2027-06-27 (+7d) |  |  |
| CON-LEG101-LR-8500 | Installation of Low Voltage Distribution Panel [Local – 08 ] | 2027-06-13 → 2027-06-20 (+7d) | 2027-06-20 → 2027-06-27 (+7d) |  | 32.1d → 31.1d |
| 11 | **CCTV feeding system and GSM** |  | 2027-06-21 → 2027-06-28 (+7d) |  |  |
| CON-LEG101-LR-10030 | Installation of Short Range wireless point to point wireless bridge [Local – 08 ] |  | 2027-06-21 → 2027-06-28 (+7d) |  | 31.4d → 30.4d |
| CON-LEG101-LR-9770 | Installation of Outdoor PTZ IP66 [Local – 08 ] |  | 2027-01-25 → 2027-02-01 (+7d) |  | 141.1d → 140.1d |
| CON-LEG101-LR-9820 | Installation of LED Screen 43" (24/7 operation) with Ethernet decoders [Local – 08 ] | 2027-06-13 → 2027-06-20 (+7d) | 2027-06-20 → 2027-06-27 (+7d) |  | 31.4d → 30.4d |
| 12 | **Earthing System** | 2027-07-18 → 2027-07-24 (+6d) | 2027-07-20 → 2027-07-26 (+6d) |  |  |
| CON-LEG101-LR-8320 | Installation of Earthing for Distribution panels,SL feeder pillars, KWH, Unit substations and RMU [Local – 08 ] | 2027-07-18 → 2027-07-24 (+6d) | 2027-07-20 → 2027-07-26 (+6d) |  | 8.7d → 8.4d |
| 9 | **Road Lighting** |  | 2027-07-20 → 2027-07-26 (+6d) |  |  |
| CON-LEG101-LR-8170 | Installation of Lighting poles [Local – 08 ] |  | 2027-07-10 → 2026-10-25 A (-258d) | 90% → 100% | -64.2d → none |
| CON-LEG101-LR-7490 | Installation of Unit Substation Including concrete foundations and fencing [Local – 08 ] |  | 2027-07-12 → 2027-07-19 (+7d) |  | 8.7d → 8.4d |
| CON-LEG101-LR-8270 | Installation of Street Lighting Luminaire [Local – 08 ] |  | 2027-07-10 → 2026-10-25 A (-258d) | 90% → 100% | 28.4d → none |
| CON-LEG101-LR-8470 | Installation of Street Lighting feeder pillars / Lighting panels [Local – 08 ] |  | 2027-07-18 → 2027-07-24 (+6d) |  | 8.7d → 8.4d |
| CON-LEG101-LR-7570 | Installation of Ring Main Unit RMU [Local – 08 ] | 2027-07-13 → 2027-07-19 (+6d) | 2027-07-17 → 2027-07-24 (+7d) |  | 8.7d → 8.4d |
| CON-LEG101-LR-8420 | Installation of Earthing for Streetlighting feeders for every end pole circuits. [Local – 08 ] | 2027-07-18 → 2027-07-24 (+6d) | 2027-07-20 → 2027-07-26 (+6d) |  | 21.6d → 23.9d |
| 3 | **Bridge** |  | 2027-08-25 → 2027-08-31 (+6d) |  |  |
| 3 | **Bridge Finishing** |  | 2027-08-25 → 2027-08-31 (+6d) |  |  |
| CON-LEG101-BR-1160 | Membrane waterproofing for concert in touch with soil and membrane waterproofing for bridge slab [Bridge ] | 2026-10-21 → 2026-10-28 (+7d) | 2026-11-01 → 2026-11-08 (+7d) |  | 111d → 105d |
| CON-LEG101-BR-1170 | Placing of Protective Coating for Concrete Surfaces [Bridge ] | 2026-11-02 → 2026-11-09 (+7d) | 2026-11-16 → 2026-11-23 (+7d) |  | 111d → 105d |
| CON-LEG101-BR-1260 | Asphalt Wearing Cource | 2026-11-17 → 2026-11-24 (+7d) | 2026-11-19 → 2026-11-26 (+7d) |  | 111d → 105d |
| CON-LEG101-BR-1190 | Installation of expansion joints for bridges [Bridge ] | 2026-11-21 → 2026-11-28 (+7d) | 2026-12-06 → 2026-12-13 (+7d) |  | 111d → 105d |
| CON-LEG101-BR-1200 | Installation of Guard Rail [Bridge ] | 2027-07-10 → 2027-07-15 (+5d) | 2027-08-02 → 2027-08-08 (+6d) |  | -64.2d → -69.5d |
| CON-LEG101-BR-1210 | Installation of GRP Panel [Bridge ] | 2027-08-02 → 2027-08-08 (+6d) | 2027-08-14 → 2027-08-19 (+5d) |  | -64.2d → -69.5d |
| CON-LEG101-BR-1220 | Installation of Logo MODON [Bridge ] | 2027-08-14 → 2027-08-19 (+5d) | 2027-08-25 → 2027-08-31 (+6d) |  | -64.2d → -69.5d |
| 4 | **Outside Boundary Area (Tie-in Lines)** |  | 2027-06-20 → 2027-06-27 (+7d) |  |  |
| 4 | **Sanitary Sewerage** |  | 2026-10-22 → 2026-10-29 (+7d) |  |  |
| 1 | **Manhole** |  | 2026-10-22 → 2026-10-29 (+7d) |  |  |
| CON-LEG101-OBA-1150 | Installation of Fiberglass Manholes [Outside Boundary Area ] |  | 2026-10-22 → 2026-10-29 (+7d) |  | 220.13d → 214.13d |
| 3 | **TSE Network** |  | 2027-06-20 → 2027-06-27 (+7d) |  |  |
| 1 | **Valves/Chamber** |  | 2027-06-20 → 2027-06-27 (+7d) |  |  |
| CON-LEG101-OBA-1070 | Installation of Butterfly valves (In Chamber) [Outside Boundary Area ] |  | 2027-06-20 → 2027-06-27 (+7d) |  | 23.18d → 17.18d |
| CON-LEG101-OBA-1500 | Installation of Valve Chamber [Outside Boundary Area ] |  | 2027-06-20 → 2027-06-27 (+7d) |  | 23.18d → 17.18d |
| 5 | **Public Water Utility Distribution** |  | 2026-10-24 → 2026-10-31 (+7d) |  |  |
| 3 | **Public Water Utility Distribution (0 - 900) m** |  | 2026-10-22 → 2026-10-29 (+7d) |  |  |
| 1 | **Valves/Chamber** |  | 2026-10-22 → 2026-10-29 (+7d) |  |  |
| CON-LEG101-OBA-1420 | Installation of Air Valve chambers [Outside Boundary Area ] 0 - 900 m |  | 2026-10-22 → 2026-10-29 (+7d) |  | 219.21d → 213.21d |
| CON-LEG101-OBA-1430 | Installation of Air Valves [Outside Boundary Area ] 0 - 900 m |  | 2026-10-22 → 2026-10-29 (+7d) |  | 219.21d → 213.21d |
| 1 | **Public Water Utility Distribution (901 - 1800) m** |  | 2026-10-24 → 2026-10-31 (+7d) |  |  |
| 1 | **Valves/Chamber** |  | 2026-10-24 → 2026-10-31 (+7d) |  |  |
| CON-LEG101-OBA-1440 | Installation of Air Valve chambers [Outside Boundary Area ] 901 - 1800 m |  | 2026-10-22 → 2026-10-29 (+7d) |  | 219.21d → 213.21d |
| CON-LEG101-OBA-1450 | Installation of Air Valves [Outside Boundary Area ] 901 - 1800 m |  | 2026-10-24 → 2026-10-31 (+7d) |  | 219.21d → 213.21d |
| CON-LEG101-OBA-1510 | Installation of Butterfly valves, on pipe with diameter 400 mm |  | 2026-10-24 → 2026-10-31 (+7d) |  | 219.21d → 213.21d |
| 8 | **Roads Finishing** |  | 2027-12-08 → 2027-12-15 (+7d) |  |  |
| 1 | **Local – 01** |  | 2027-11-09 → 2027-11-14 (+5d) |  |  |
| 1 | **LOCAL - 01 Segment-01 (From 0+000 to 1+066)** |  | 2027-10-12 → 2027-10-04 (-8d) |  |  |
| 7 | **Concrete Curb** |  | 2027-07-29 → 2026-10-22 (-280d) |  |  |
| CON-LEG101-LR-6180 | Installation of Precast Concrete Curb [Local – 01 Segment-01] |  | 2027-07-29 → 2026-10-22 A (-280d) | 90% → 100% | -106.45d → none |

| ID | Task | Start | Finish | Complete | Total float |
| --- | --- | --- | --- | --- | --- |
| 1 | **Asphalt Wearing Course** |  | 2027-08-07 → 2027-08-11 (+4d) |  |  |
| CON-LEG101-LR-5980 | Tack coat (RC2) [Local – 01 Segment-01] |  | 2027-08-02 → 2027-08-07 (+5d) |  | -53.7d → -57.9d |
| CON-LEG101-LR-6080 | Bituminous wearing course [Local – 01 Segment-01] |  | 2027-08-07 → 2027-08-11 (+4d) |  | -53.7d → -57.9d |
| 4 | **Interlocking block sidewalk/footpath** |  | 2027-10-12 → 2026-10-26 (-351d) |  |  |
| CON-LEG101-LR-6280 | Interlocking block pavers for sidewalk/footpath [Local – 01 Segment-01] |  | 2027-10-12 → 2026-10-26 A (-351d) | 60% → 100% | -42d → none |
| 5 | **Pavement Markings** | 2027-08-21 → 2027-08-25 (+4d) | 2027-09-08 → 2027-09-13 (+5d) |  |  |
| CON-LEG101-LR-6580 | Pavement Markings (White Paint/Yellow Paint) [Local – 01 Segment-01] | 2027-08-21 → 2027-08-25 (+4d) | 2027-08-28 → 2027-09-01 (+4d) |  | -66.1d → -70.3d |
| CON-LEG101-LR-6680 | Handicap ramp [Local – 01 Segment-01] | 2027-08-28 → 2027-09-01 (+4d) | 2027-09-08 → 2027-09-13 (+5d) |  | -61.1d → -65.3d |
| 6 | **Traffic Signs** |  | 2027-09-29 → 2027-10-04 (+5d) |  |  |
| CON-LEG101-LR-6780 | Installation of Traffic Signs [Local – 01 Segment-01] |  | 2027-09-29 → 2027-10-04 (+5d) |  | -40.95d → -45.15d |
| CON-LEG101-LR-6480 | Retroreflective Plastic Cones [Local – 01 Segment-01] | 2027-09-08 → 2027-09-13 (+5d) | 2027-09-19 → 2027-09-25 (+6d) |  | -60.1d → -64.3d |
| 2 | **LOCAL - 01 Segment-02 (From 1+066 to 2+133)** |  | 2027-10-17 → 2027-10-21 (+4d) |  |  |
| 1 | **Asphalt Wearing Course** |  | 2027-08-10 → 2027-08-15 (+5d) |  |  |
| CON-LEG101-LR-5990 | Tack coat (RC2) [Local – 01 Segment-02] |  | 2027-08-08 → 2027-08-14 (+6d) |  | -51.55d → -50.15d |
| CON-LEG101-LR-6090 | Bituminous wearing course [Local – 01 Segment-02] |  | 2027-08-10 → 2027-08-15 (+5d) |  | -51.55d → -50.15d |
| 5 | **Pavement Markings** | 2027-08-28 → 2027-09-01 (+4d) | 2027-09-27 → 2027-10-02 (+5d) |  |  |
| CON-LEG101-LR-6590 | Pavement Markings (White Paint/Yellow Paint) [Local – 01 Segment-02] | 2027-08-28 → 2027-09-01 (+4d) | 2027-09-14 → 2027-09-19 (+5d) |  | -66.1d → -70.3d |
| CON-LEG101-LR-6690 | Handicap ramp [Local – 01 Segment-02] | 2027-09-14 → 2027-09-19 (+5d) | 2027-09-27 → 2027-10-02 (+5d) |  | -66.1d → -70.3d |
| 6 | **Traffic Signs** |  | 2027-10-17 → 2027-10-21 (+4d) |  |  |
| CON-LEG101-LR-6790 | Installation of Traffic Signs [Local – 01 Segment-02] |  | 2027-10-17 → 2027-10-21 (+4d) |  | -51.35d → -55.55d |
| CON-LEG101-LR-6490 | Retroreflective Plastic Cones [Local – 01 Segment-02] | 2027-09-27 → 2027-10-02 (+5d) | 2027-10-11 → 2027-10-16 (+5d) |  | -66.1d → -70.3d |
| 3 | **LOCAL - 01 Segment-03 (From 2+133 to 3+200)** |  | 2027-11-09 → 2027-11-14 (+5d) |  |  |
| 1 | **Asphalt Wearing Course** | 2027-08-10 → 2026-10-24 (-290d) | 2027-08-19 → 2027-08-18 (-1d) |  |  |
| CON-LEG101-LR-6000 | Tack coat (RC2) [Local – 01 Segment-03] | 2027-08-10 → 2026-10-24 A (-290d) | 2027-08-15 → 2027-08-17 (+2d) | 0% → 70% | -51.55d → -50.15d |
| CON-LEG101-LR-6100 | Bituminous wearing course [Local – 01 Segment-03] | 2027-08-15 → 2026-10-24 A (-295d) | 2027-08-19 → 2027-08-18 (-1d) | 0% → 70% | -51.55d → -50.15d |
| 5 | **Pavement Markings** | 2027-09-14 → 2027-09-19 (+5d) | 2027-10-11 → 2027-10-16 (+5d) |  |  |
| CON-LEG101-LR-6600 | Pavement Markings (White Paint/Yellow Paint) [Local – 01 Segment-03] | 2027-09-14 → 2027-09-19 (+5d) | 2027-09-27 → 2027-10-02 (+5d) |  | -66.1d → -70.3d |
| CON-LEG101-LR-6700 | Handicap ramp [Local – 01 Segment-03] | 2027-09-27 → 2027-10-02 (+5d) | 2027-10-11 → 2027-10-16 (+5d) |  | -66.1d → -70.3d |
| 6 | **Traffic Signs** |  | 2027-11-09 → 2027-11-14 (+5d) |  |  |
| CON-LEG101-LR-6800 | Installation of Traffic Signs [Local – 01 Segment-03] |  | 2027-11-09 → 2027-11-14 (+5d) |  | -66.1d → -70.3d |
| CON-LEG101-LR-6500 | Retroreflective Plastic Cones [Local – 01 Segment-03] | 2027-10-11 → 2027-10-16 (+5d) | 2027-11-03 → 2027-11-08 (+5d) |  | -66.1d → -70.3d |
| 2 | **Local – 02** |  | 2027-11-07 → 2027-11-11 (+4d) |  |  |
| 1 | **Asphalt Wearing Course** |  | 2027-08-21 → 2027-08-18 (-3d) |  |  |
| CON-LEG101-LR-6010 | Tack coat (RC2) [Local – 02 ] |  | 2027-08-19 → 2027-08-18 (-1d) |  | -51.55d → -50.15d |
| CON-LEG101-LR-6110 | Bituminous wearing course [Local – 02 ] |  | 2027-08-21 → 2027-08-18 (-3d) |  | -51.55d → -50.15d |
| 5 | **Pavement Markings** | 2027-09-27 → 2027-10-02 (+5d) | 2027-10-20 → 2027-10-25 (+5d) |  |  |
| CON-LEG101-LR-6610 | Pavement Markings (White Paint/Yellow Paint) [Local – 02 ] | 2027-09-27 → 2027-10-02 (+5d) | 2027-10-09 → 2027-10-13 (+4d) |  | -64.1d → -68.3d |
| CON-LEG101-LR-6710 | Handicap ramp [Local – 02 ] | 2027-10-09 → 2027-10-13 (+4d) | 2027-10-20 → 2027-10-25 (+5d) |  | -64.1d → -68.3d |
| 6 | **Traffic Signs** |  | 2027-11-07 → 2027-11-11 (+4d) |  |  |
| CON-LEG101-LR-6810 | Installation of Traffic Signs [Local – 02 ] |  | 2027-11-07 → 2027-11-11 (+4d) |  | -64.1d → -68.3d |
| CON-LEG101-LR-6510 | Retroreflective Plastic Cones [Local – 02 ] | 2027-10-20 → 2027-10-25 (+5d) | 2027-11-01 → 2027-11-06 (+5d) |  | -64.1d → -68.3d |
| 3 | **Local – 03** |  | 2027-10-18 → 2027-10-17 (-1d) |  |  |
| 7 | **Concrete Curb** |  | 2027-07-26 → 2027-08-02 (+7d) |  |  |
| CON-LEG101-LR-6220 | Installation of Precast Concrete Curb [Local – 03 ] |  | 2027-07-26 → 2027-08-02 (+7d) |  | -111.55d → -117.55d |
| 1 | **Asphalt Wearing Course** | 2027-08-21 → 2027-08-18 (-3d) | 2027-08-26 → 2027-08-24 (-2d) |  |  |
| CON-LEG101-LR-6020 | Tack coat (RC2) [Local – 03 ] | 2027-08-21 → 2027-08-18 (-3d) | 2027-08-23 → 2027-08-21 (-2d) |  | -51.55d → -50.15d |
| CON-LEG101-LR-6120 | Bituminous wearing course [Local – 03 ] | 2027-08-23 → 2027-08-21 (-2d) | 2027-08-26 → 2027-08-24 (-2d) |  | -51.55d → -50.15d |
| 3 | **Interlocking block roads/on-street parking** | 2027-08-26 → 2027-08-24 (-2d) | 2027-09-20 → 2027-09-18 (-2d) |  |  |
| CON-LEG101-LR-6420 | Interlocking block pavers for roads/on-street parking [Local – 03 ] | 2027-08-26 → 2027-08-24 (-2d) | 2027-09-20 → 2027-09-18 (-2d) |  | -42.45d → -26.35d |
| 4 | **Interlocking block sidewalk/footpath** |  | 2027-10-13 → 2027-09-22 (-21d) |  |  |
| CON-LEG101-LR-6320 | Interlocking block pavers for sidewalk/footpath [Local – 03 ] |  | 2027-10-13 → 2027-09-22 (-21d) | 10% → 80% | -42.45d → -26.35d |
| 5 | **Pavement Markings** | 2027-08-26 → 2027-08-25 (-1d) | 2027-09-19 → 2027-09-18 (-1d) |  |  |
| CON-LEG101-LR-6620 | Pavement Markings (White Paint/Yellow Paint) [Local – 03 ] | 2027-08-26 → 2027-08-25 (-1d) | 2027-09-07 → 2027-09-06 (-1d) |  | -46.55d → -46.05d |
| CON-LEG101-LR-6720 | Handicap ramp [Local – 03 ] | 2027-09-07 → 2027-09-06 (-1d) | 2027-09-19 → 2027-09-18 (-1d) |  | -46.55d → -46.05d |
| 6 | **Traffic Signs** |  | 2027-10-18 → 2027-10-17 (-1d) |  |  |
| CON-LEG101-LR-6820 | Installation of Traffic Signs [Local – 03 ] |  | 2027-10-18 → 2027-10-17 (-1d) |  | -46.55d → -46.05d |
| CON-LEG101-LR-6520 | Retroreflective Plastic Cones [Local – 03 ] | 2027-09-19 → 2027-09-18 (-1d) | 2027-10-02 → 2027-09-30 (-2d) |  | -46.55d → -46.05d |
| 4 | **Local – 04** | 2027-09-18 → 2027-09-26 (+8d) | 2027-12-08 → 2027-12-15 (+7d) |  |  |
| 7 | **Concrete Curb** | 2027-09-18 → 2027-09-26 (+8d) | 2027-10-12 → 2027-10-19 (+7d) |  |  |
| CON-LEG101-LR-6230 | Installation of Precast Concrete Curb [Local – 04 ] | 2027-09-18 → 2027-09-26 (+8d) | 2027-10-12 → 2027-10-19 (+7d) |  | -157d → -163d |
| 1 | **Asphalt Wearing Course** | 2027-10-13 → 2027-10-20 (+7d) | 2027-10-18 → 2027-10-25 (+7d) |  |  |
| CON-LEG101-LR-6030 | Tack coat (RC2) [Local – 04 ] | 2027-10-13 → 2027-10-20 (+7d) | 2027-10-14 → 2027-10-21 (+7d) |  | -91.4d → -97.4d |
| CON-LEG101-LR-6130 | Bituminous wearing course [Local – 04 ] | 2027-10-16 → 2027-10-23 (+7d) | 2027-10-18 → 2027-10-25 (+7d) |  | -91.4d → -97.4d |
| 3 | **Interlocking block roads/on-street parking** | 2027-10-19 → 2027-10-26 (+7d) | 2027-11-09 → 2027-11-16 (+7d) |  |  |
| CON-LEG101-LR-6430 | Interlocking block pavers for roads/on-street parking [Local – 04 ] | 2027-10-19 → 2027-10-26 (+7d) | 2027-11-09 → 2027-11-16 (+7d) |  | -85.4d → -91.4d |
| 4 | **Interlocking block sidewalk/footpath** | 2027-11-10 → 2027-11-17 (+7d) | 2027-12-01 → 2027-12-08 (+7d) |  |  |
| CON-LEG101-LR-6330 | Interlocking block pavers for sidewalk/footpath [Local – 04 ] | 2027-11-10 → 2027-11-17 (+7d) | 2027-12-01 → 2027-12-08 (+7d) |  | -85.4d → -91.4d |
| 5 | **Pavement Markings** | 2027-10-19 → 2027-10-26 (+7d) | 2027-11-10 → 2027-11-17 (+7d) |  |  |
| CON-LEG101-LR-6630 | Pavement Markings (White Paint/Yellow Paint) [Local – 04 ] | 2027-10-19 → 2027-10-26 (+7d) | 2027-10-30 → 2027-11-06 (+7d) |  | -91.4d → -97.4d |
| CON-LEG101-LR-6730 | Handicap ramp [Local – 04 ] | 2027-10-31 → 2027-11-07 (+7d) | 2027-11-10 → 2027-11-17 (+7d) |  | -91.4d → -97.4d |

| ID | Task | Start | Finish | Complete | Total float |
| --- | --- | --- | --- | --- | --- |
| 6 | **Traffic Signs** | 2027-11-11 → 2027-11-18 (+7d) | 2027-12-08 → 2027-12-15 (+7d) |  |  |
| CON-LEG101-LR-6530 | Retroreflective Plastic Cones [Local – 04 ] | 2027-11-11 → 2027-11-18 (+7d) | 2027-11-22 → 2027-11-29 (+7d) |  | -91.4d → -97.4d |
| CON-LEG101-LR-6830 | Installation of Traffic Signs [Local – 04 ] | 2027-11-23 → 2027-11-30 (+7d) | 2027-12-08 → 2027-12-15 (+7d) |  | -91.4d → -97.4d |
| 5 | **Local – 05** |  | 2027-11-21 → 2027-11-28 (+7d) |  |  |
| 1 | **Asphalt Wearing Course** |  | 2027-10-19 → 2027-10-26 (+7d) |  |  |
| CON-LEG101-LR-6040 | Tack coat (RC2) [Local – 05 ] |  | 2027-10-19 → 2027-10-26 (+7d) |  | -77.9d → -83.4d |
| CON-LEG101-LR-6140 | Bituminous wearing course [Local – 05 ] |  | 2027-10-19 → 2027-10-26 (+7d) |  | -77.9d → -83.4d |
| 5 | **Pavement Markings** | 2027-10-19 → 2027-10-26 (+7d) | 2027-11-11 → 2027-11-18 (+7d) |  |  |
| CON-LEG101-LR-6640 | Pavement Markings (White Paint/Yellow Paint) [Local – 05 ] | 2027-10-19 → 2027-10-26 (+7d) | 2027-10-31 → 2027-11-07 (+7d) |  | -75.9d → -81.9d |
| CON-LEG101-LR-6740 | Handicap ramp [Local – 05 ] | 2027-10-31 → 2027-11-07 (+7d) | 2027-11-11 → 2027-11-18 (+7d) |  | -75.9d → -81.9d |
| 6 | **Traffic Signs** |  | 2027-11-21 → 2027-11-28 (+7d) |  |  |
| CON-LEG101-LR-6840 | Installation of Traffic Signs [Local – 05 ] |  | 2027-11-21 → 2027-11-28 (+7d) |  | -75.9d → -81.9d |
| CON-LEG101-LR-6540 | Retroreflective Plastic Cones [Local – 05 ] | 2027-11-11 → 2027-11-18 (+7d) | 2027-11-17 → 2027-11-24 (+7d) |  | -75.9d → -81.9d |
| 6 | **Local – 06** |  | 2027-11-23 → 2027-11-29 (+6d) |  |  |
| 1 | **Asphalt Wearing Course** |  | 2027-10-21 → 2027-10-28 (+7d) |  |  |
| CON-LEG101-LR-6050 | Tack coat (RC2) [Local – 06 ] |  | 2027-10-20 → 2027-10-27 (+7d) | 60% → 70% | -77.9d → -83.4d |
| CON-LEG101-LR-6150 | Bituminous wearing course [Local – 06 ] |  | 2027-10-21 → 2027-10-28 (+7d) | 60% → 70% | -77.9d → -83.4d |
| 5 | **Pavement Markings** | 2027-10-21 → 2027-10-28 (+7d) | 2027-11-14 → 2027-11-21 (+7d) |  |  |
| CON-LEG101-LR-6650 | Pavement Markings (White Paint/Yellow Paint) [Local – 06 ] | 2027-10-21 → 2027-10-28 (+7d) | 2027-11-02 → 2027-11-09 (+7d) |  | -77.9d → -83.4d |
| CON-LEG101-LR-6750 | Handicap ramp [Local – 06 ] | 2027-11-02 → 2027-11-09 (+7d) | 2027-11-14 → 2027-11-21 (+7d) |  | -77.9d → -83.4d |
| 6 | **Traffic Signs** |  | 2027-11-23 → 2027-11-29 (+6d) |  |  |
| CON-LEG101-LR-6850 | Installation of Traffic Signs [Local – 06 ] |  | 2027-11-23 → 2027-11-29 (+6d) |  | -77.9d → -83.4d |
| CON-LEG101-LR-6550 | Retroreflective Plastic Cones [Local – 06 ] | 2027-11-14 → 2027-11-21 (+7d) | 2027-11-18 → 2027-11-25 (+7d) |  | -77.9d → -83.4d |
| 7 | **Local – 07** |  | 2027-11-01 → 2027-11-08 (+7d) |  |  |
| 1 | **Asphalt Wearing Course** |  | 2027-10-14 → 2027-10-21 (+7d) |  |  |
| CON-LEG101-LR-6060 | Tack coat (RC2) [Local – 07 ] |  | 2027-10-13 → 2027-10-20 (+7d) |  | -59.1d → -65.1d |
| CON-LEG101-LR-6160 | Bituminous wearing course [Local – 07 ] |  | 2027-10-14 → 2027-10-21 (+7d) |  | -59.1d → -65.1d |
| 5 | **Pavement Markings** | 2027-10-14 → 2027-10-21 (+7d) | 2027-10-24 → 2027-10-31 (+7d) |  |  |
| CON-LEG101-LR-6660 | Pavement Markings (White Paint/Yellow Paint) [Local – 07 ] | 2027-10-14 → 2027-10-21 (+7d) | 2027-10-19 → 2027-10-26 (+7d) |  | -59.1d → -65.1d |
| CON-LEG101-LR-6760 | Handicap ramp [Local – 07 ] | 2027-10-19 → 2027-10-26 (+7d) | 2027-10-24 → 2027-10-31 (+7d) |  | -59.1d → -65.1d |
| 6 | **Traffic Signs** |  | 2027-11-01 → 2027-11-08 (+7d) |  |  |
| CON-LEG101-LR-6860 | Installation of Traffic Signs [Local – 07 ] |  | 2027-11-01 → 2027-11-08 (+7d) |  | -59.1d → -65.1d |
| CON-LEG101-LR-6560 | Retroreflective Plastic Cones [Local – 07 ] | 2027-10-24 → 2027-10-31 (+7d) | 2027-10-28 → 2027-11-04 (+7d) |  | -59.1d → -65.1d |
| 8 | **Local – 08** |  | 2027-11-06 → 2027-11-07 (+1d) |  |  |
| 1 | **Asphalt Wearing Course** | 2027-10-13 → 2026-10-24 (-354d) | 2027-10-18 → 2026-10-24 (-359d) |  |  |
| CON-LEG101-LR-6070 | Tack coat (RC2) [Local – 08 ] | 2027-10-13 → 2026-10-24 A (-354d) | 2027-10-14 → 2026-10-24 A (-355d) | 0% → 100% | -62.9d → none |
| CON-LEG101-LR-6170 | Bituminous wearing course [Local – 08 ] | 2027-10-16 → 2026-10-24 A (-357d) | 2027-10-18 → 2026-10-24 A (-359d) | 0% → 100% | -62.9d → none |
| 5 | **Pavement Markings** | 2027-10-19 → 2027-10-20 (+1d) | 2027-10-27 → 2027-10-28 (+1d) |  |  |
| CON-LEG101-LR-6670 | Pavement Markings (White Paint/Yellow Paint) [Local – 08 ] | 2027-10-19 → 2027-10-20 (+1d) | 2027-10-23 → 2027-10-24 (+1d) |  | -62.9d → -63.9d |
| CON-LEG101-LR-6770 | Handicap ramp [Local – 08 ] | 2027-10-24 → 2027-10-25 (+1d) | 2027-10-27 → 2027-10-28 (+1d) |  | -62.9d → -63.9d |
| 6 | **Traffic Signs** |  | 2027-11-06 → 2027-11-07 (+1d) |  |  |
| CON-LEG101-LR-6870 | Installation of Traffic Signs [Local – 08 ] |  | 2027-11-06 → 2027-11-07 (+1d) |  | -62.9d → -63.9d |
| CON-LEG101-LR-6570 | Retroreflective Plastic Cones [Local – 08 ] | 2027-10-28 → 2027-10-30 (+2d) | 2027-11-01 → 2027-11-02 (+1d) |  | -62.9d → -63.9d |
| 5 | **Fence and Gate** |  | 2027-11-30 → 2027-12-07 (+7d) |  |  |
| 1 | **Fence and Gate Segment -01 (From 0+000 to 0+671)** |  | 2027-02-18 → 2027-02-27 (+9d) |  |  |
| 1 | **Fence** |  | 2027-02-18 → 2027-02-27 (+9d) |  |  |
| CON-LEG101-FG-1000 | Excavation for Fences [Fence and Gate Segment -01] |  | 2026-10-25 → 2026-11-01 (+7d) |  | 23.68d → 17.68d |
| CON-LEG101-FG-1100 | Lean concrete for Foundation [Fence and Gate Segment -01] |  | 2026-10-29 → 2026-11-05 (+7d) |  | 23.68d → 17.68d |
| CON-LEG101-FG-1150 | Reinforced concrete Structure [Fence and Gate Segment -01] |  | 2026-11-19 → 2026-11-26 (+7d) |  | 23.68d → 17.68d |
| CON-LEG101-FG-1200 | Spraying of bituminous paint waterproofing for R.C foundation [Fence and Gate Segment -01] | 2026-11-19 → 2026-11-26 (+7d) | 2026-12-01 → 2026-12-08 (+7d) |  | 23.68d → 17.68d |
| CON-LEG101-FG-1260 | Embankments to the Fences [Fence and Gate Segment -01] | 2026-12-01 → 2026-12-08 (+7d) | 2026-12-10 → 2026-12-17 (+7d) |  | 23.68d → 17.68d |
| CON-LEG101-FG-1050 | Concrete Works for Ground Beam for Fences [Fence and Gate Segment -01] | 2026-12-10 → 2026-12-17 (+7d) | 2027-01-03 → 2027-01-10 (+7d) |  | 23.68d → 17.68d |
| CON-LEG101-FG-1420 | Plster Works for Fences [Fence and Gate Segment -01] | 2027-01-03 → 2027-01-10 (+7d) | 2027-01-17 → 2027-01-24 (+7d) |  | 23.68d → 17.68d |
| CON-LEG101-FG-1280 | Installation of Metal Fence [Fence and Gate Segment -01] | 2027-01-17 → 2027-01-24 (+7d) | 2027-02-02 → 2027-02-14 (+12d) |  | 23.68d → 17.68d |
| CON-LEG101-FG-1340 | Paint On Cement Plaster [Fence and Gate Segment -01] | 2027-02-02 → 2027-02-14 (+12d) | 2027-02-18 → 2027-02-27 (+9d) |  | 23.68d → 17.68d |
| 2 | **Fence and Gate Segment -02 (From 0+671 to 1+342)** |  | 2027-04-20 → 2027-04-27 (+7d) |  |  |
| 1 | **Fence** |  | 2027-04-20 → 2027-04-27 (+7d) |  |  |
| CON-LEG101-FG-1010 | Excavation for Fences [Fence and Gate Segment -02] |  | 2027-02-23 → 2027-03-02 (+7d) |  | 23.68d → 17.68d |
| CON-LEG101-FG-1110 | Lean concrete for Foundation [Fence and Gate Segment -02] |  | 2027-02-24 → 2027-03-03 (+7d) |  | 23.68d → 17.68d |
| CON-LEG101-FG-1160 | Reinforced concrete Structure [Fence and Gate Segment -02] |  | 2027-03-02 → 2027-03-09 (+7d) |  | 23.68d → 17.68d |
| CON-LEG101-FG-1210 | Spraying of bituminous paint waterproofing for R.C foundation [Fence and Gate Segment -02] |  | 2027-03-04 → 2027-03-11 (+7d) |  | 23.68d → 17.68d |
| CON-LEG101-FG-1330 | Embankments to the Fences [Fence and Gate Segment -02] |  | 2027-03-07 → 2027-03-14 (+7d) |  | 23.68d → 17.68d |
| CON-LEG101-FG-1060 | Concrete Works for Ground Beam for Fences [Fence and Gate Segment -02] |  | 2027-03-13 → 2027-03-20 (+7d) |  | 23.68d → 17.68d |
| CON-LEG101-FG-1290 | Installation of Metal Fence [Fence and Gate Segment -02] |  | 2027-04-06 → 2027-04-13 (+7d) |  | 23.68d → 17.68d |
| CON-LEG101-FG-1430 | Plster Works for Fences [Fence and Gate Segment -02] | 2027-03-13 → 2027-03-20 (+7d) | 2027-03-27 → 2027-04-03 (+7d) |  | 23.68d → 17.68d |
| CON-LEG101-FG-1350 | Paint On Cement Plaster [Fence and Gate Segment -02] | 2027-04-06 → 2027-04-13 (+7d) | 2027-04-20 → 2027-04-27 (+7d) |  | 23.68d → 17.68d |
| 3 | **Fence and Gate Segment -03 (From 1+342 to 2+014)** |  | 2027-06-19 → 2027-06-26 (+7d) |  |  |
| 1 | **Fence** |  | 2027-05-08 → 2027-05-19 (+11d) |  |  |
| CON-LEG101-FG-1300 | Installation of Metal Fence [Fence and Gate Segment -03] |  | 2027-04-28 → 2027-05-05 (+7d) |  | 23.68d → 17.68d |
| CON-LEG101-FG-1440 | Plster Works for Fences [Fence and Gate Segment -03] |  | 2027-04-28 → 2027-05-05 (+7d) |  | 23.68d → 17.68d |

| ID | Task | Start | Finish | Total float |
| --- | --- | --- | --- | --- |
| CON-LEG101-FG-1360 | Paint On Cement Plaster [Fence and Gate Segment -03] |  | 2027-05-08 → 2027-05-19 (+11d) | 56.48d → 50.48d |
| 2 | **Gate** | 2027-04-28 → 2027-05-05 (+7d) | 2027-06-19 → 2027-06-26 (+7d) |  |
| CON-LEG101-FG-1250 | Installation of Main Entrance Motorized Gate [Fence and Gate Segment -03] | 2027-04-28 → 2027-05-05 (+7d) | 2027-05-26 → 2027-06-02 (+7d) | 23.68d → 17.68d |
| CON-LEG101-FG-1270 | Installation of Pedestrain Gate [Fence and Gate Segment -03] | 2027-05-26 → 2027-06-02 (+7d) | 2027-06-19 → 2027-06-26 (+7d) | 23.68d → 17.68d |
| 4 | **Fence and Gate Segment -04 (From 2+014 to 2+685)** |  | 2027-08-25 → 2027-09-01 (+7d) |  |
| 1 | **Fence** |  | 2027-08-25 → 2027-09-01 (+7d) |  |
| CON-LEG101-FG-1370 | Paint On Cement Plaster [Fence and Gate Segment -04] |  | 2027-08-25 → 2027-09-01 (+7d) | -33.2d → -38.5d |
| CON-LEG101-FG-1450 | Plster Works for Fences [Fence and Gate Segment -04] |  | 2027-06-20 → 2027-06-27 (+7d) | 23.18d → 17.18d |
| 5 | **Fence and Gate Segment -05 (From 2+685 to 3+356)** | 2027-08-25 → 2027-09-01 (+7d) | 2027-11-30 → 2027-12-07 (+7d) |  |
| 1 | **Fence** | 2027-08-25 → 2027-09-01 (+7d) | 2027-11-30 → 2027-12-07 (+7d) |  |
| CON-LEG101-FG-1040 | Excavation for Fences [Fence and Gate Segment -05] | 2027-08-25 → 2027-09-01 (+7d) | 2027-09-06 → 2027-09-13 (+7d) | -33.2d → -38.5d |
| CON-LEG101-FG-1140 | Lean concrete for Foundation [Fence and Gate Segment -05] | 2027-09-06 → 2027-09-13 (+7d) | 2027-09-11 → 2027-09-18 (+7d) | -33.2d → -38.5d |
| CON-LEG101-FG-1190 | Reinforced concrete Structure [Fence and Gate Segment -05] | 2027-09-11 → 2027-09-18 (+7d) | 2027-10-05 → 2027-10-12 (+7d) | -33.2d → -38.5d |
| CON-LEG101-FG-1240 | Spraying of bituminous paint waterproofing for R.C foundation [Fence and Gate Segment -05] | 2027-10-05 → 2027-10-12 (+7d) | 2027-10-17 → 2027-10-24 (+7d) | -33.2d → -38.5d |
| CON-LEG101-FG-1410 | Embankments to the Fences [Fence and Gate Segment -05] | 2027-10-17 → 2027-10-24 (+7d) | 2027-10-21 → 2027-10-28 (+7d) | -33.2d → -38.5d |
| CON-LEG101-FG-1090 | Concrete Works for Ground Beam for Fences [Fence and Gate Segment -05] | 2027-10-21 → 2027-10-28 (+7d) | 2027-11-08 → 2027-11-15 (+7d) | -33.2d → -38.5d |
| CON-LEG101-FG-1460 | Plster Works for Fences [Fence and Gate Segment -05] | 2027-11-08 → 2027-11-15 (+7d) | 2027-11-15 → 2027-11-22 (+7d) | -33.2d → -38.5d |
| CON-LEG101-FG-1320 | Installation of Metal Fence [Fence and Gate Segment -05] | 2027-11-15 → 2027-11-22 (+7d) | 2027-11-23 → 2027-11-30 (+7d) | -33.2d → -38.5d |
| CON-LEG101-FG-1380 | Paint On Cement Plaster [Fence and Gate Segment -05] | 2027-11-23 → 2027-11-30 (+7d) | 2027-11-30 → 2027-12-07 (+7d) | -33.2d → -38.5d |
| 2 | **Roundabout & Landscape** | 2027-07-29 → 2027-08-03 (+5d) | 2028-04-18 → 2028-04-25 (+7d) |  |
| 10 | **Local – 01** | 2027-07-29 → 2027-08-03 (+5d) | 2028-02-12 → 2028-02-16 (+4d) |  |
| 1 | **LOCAL - 01 Segment-01 (From 0+000 to 1+066)** | 2027-07-29 → 2027-08-03 (+5d) | 2028-01-11 → 2028-01-16 (+5d) |  |
| 3 | **Irrigation Works** | 2027-07-29 → 2027-08-03 (+5d) | 2027-11-25 → 2027-11-30 (+5d) |  |
| 1 | **Secondary Irrigation** | 2027-07-29 → 2027-08-03 (+5d) | 2027-11-25 → 2027-11-30 (+5d) |  |
| 1 | **Pipe Work** | 2027-07-29 → 2027-08-03 (+5d) | 2027-10-09 → 2027-10-13 (+4d) |  |
| CON-LEG101-LR-4870 | Excavation for Secondary Irrigation [Local – 01 Segment-01] | 2027-07-29 → 2027-08-03 (+5d) | 2027-08-08 → 2027-08-12 (+4d) | -106.45d → -110.65d |
| CON-LEG101-LR-4940 | Sand bedding for Secondary Irrigation [Local – 01 Segment-01] | 2027-08-08 → 2027-08-12 (+4d) | 2027-08-14 → 2027-08-18 (+4d) | -106.45d → -110.65d |
| CON-LEG101-LR-5010 | Installation of Pipe for Secondary Irrigation [Local – 01 Segment-01] | 2027-08-14 → 2027-08-18 (+4d) | 2027-08-25 → 2027-08-30 (+5d) | -106.45d → -110.65d |
| CON-LEG101-LR-5080 | Sand Surround for Secondary Irrigation [Local – 01 Segment-01] | 2027-08-25 → 2027-08-30 (+5d) | 2027-08-31 → 2027-09-05 (+5d) | -106.45d → -110.65d |
| CON-LEG101-LR-5150 | Installation of Micron Marker Magnetic Tape [Local – 01 Segment-01] | 2027-08-31 → 2027-09-05 (+5d) | 2027-09-12 → 2027-09-16 (+4d) | -106.45d → -110.65d |
| CON-LEG101-LR-5210 | Backfilling to Subgrade Elevation [Local – 01 Segment-01] | 2027-09-12 → 2027-09-16 (+4d) | 2027-09-18 → 2027-09-22 (+4d) | -106.45d → -110.65d |
| CON-LEG101-LR-5410 | Installation of tubing for risers connections from laterals [Local – 01 Segment-01] | 2027-09-18 → 2027-09-22 (+4d) | 2027-10-09 → 2027-10-13 (+4d) | -106.45d → -110.65d |
| 2 | **Valves and Controller** | 2027-10-09 → 2027-10-13 (+4d) | 2027-11-25 → 2027-11-30 (+5d) |  |
| CON-LEG101-LR-5270 | Installation of Electrical Solenoid Valve [Local – 01 Segment-01] | 2027-10-09 → 2027-10-13 (+4d) | 2027-10-14 → 2027-10-19 (+5d) | -98.45d → -102.65d |
| CON-LEG101-LR-5310 | Installation of quick coupler valve [Local – 01 Segment-01] | 2027-10-14 → 2027-10-19 (+5d) | 2027-10-20 → 2027-10-25 (+5d) | -98.45d → -102.65d |
| CON-LEG101-LR-5350 | Installation of a Flush valve [Local – 01 Segment-01] | 2027-10-20 → 2027-10-25 (+5d) | 2027-10-26 → 2027-10-31 (+5d) | -98.45d → -102.65d |
| CON-LEG101-LR-5470 | Installation of Advanced Irrigation controller [Local – 01 Segment-01] | 2027-10-26 → 2027-10-31 (+5d) | 2027-11-03 → 2027-11-08 (+5d) | -98.45d → -102.65d |
| CON-LEG101-LR-5480 | Install single station decoder for valve connection [Local – 01 Segment-01] | 2027-11-03 → 2027-11-08 (+5d) | 2027-11-11 → 2027-11-16 (+5d) | -98.45d → -102.65d |
| CON-LEG101-LR-5520 | Installation of Decoder cables 12 AWG between valves and controllers [Local – 01 Segment-01] | 2027-11-11 → 2027-11-16 (+5d) | 2027-11-25 → 2027-11-30 (+5d) | -98.45d → -102.65d |
| 14 | **Curbs and edging** | 2027-11-25 → 2027-11-30 (+5d) | 2027-11-28 → 2027-12-02 (+4d) |  |
| CON-LEG101-LR-4790 | Installation of Curbs and edging [Local – 01 Segment-01] | 2027-11-25 → 2027-11-30 (+5d) | 2027-11-28 → 2027-12-02 (+4d) | -98.45d → -102.65d |
| 13 | **Landscape** | 2027-11-28 → 2027-12-02 (+4d) | 2028-01-11 → 2028-01-16 (+5d) |  |
| CON-LEG101-LR-4580 | Site preparation for Planting Area [Local – 01 Segment-01] | 2027-11-28 → 2027-12-02 (+4d) | 2027-12-08 → 2027-12-13 (+5d) | -98.45d → -102.65d |
| CON-LEG101-LR-4650 | Placing Agricutural Soil [Local – 01 Segment-01] | 2027-12-08 → 2027-12-13 (+5d) | 2027-12-19 → 2027-12-23 (+4d) | -98.45d → -102.65d |
| CON-LEG101-LR-4720 | Planting Shrubs And Ground Cover [Local – 01 Segment-01] | 2027-12-19 → 2027-12-23 (+4d) | 2028-01-11 → 2028-01-16 (+5d) | -72.45d → -76.65d |
| 2 | **LOCAL - 01 Segment-02 (From 1+066 to 2+133)** | 2027-10-09 → 2027-10-13 (+4d) | 2028-02-10 → 2028-02-15 (+5d) |  |
| 2 | **Irrigation Works** | 2027-10-09 → 2027-10-13 (+4d) | 2028-01-08 → 2028-01-12 (+4d) |  |
| 1 | **Secondary Irrigation** | 2027-10-09 → 2027-10-13 (+4d) | 2028-01-08 → 2028-01-12 (+4d) |  |
| 1 | **Pipe Work** | 2027-10-09 → 2027-10-13 (+4d) | 2027-12-02 → 2027-12-07 (+5d) |  |
| CON-LEG101-LR-4880 | Excavation for Secondary Irrigation [Local – 01 Segment-02] | 2027-10-09 → 2027-10-13 (+4d) | 2027-10-14 → 2027-10-19 (+5d) | -106.45d → -110.65d |
| CON-LEG101-LR-4950 | Sand bedding for Secondary Irrigation [Local – 01 Segment-02] | 2027-10-14 → 2027-10-19 (+5d) | 2027-10-20 → 2027-10-25 (+5d) | -106.45d → -110.65d |
| CON-LEG101-LR-5020 | Installation of Pipe for Secondary Irrigation [Local – 01 Segment-02] | 2027-10-20 → 2027-10-25 (+5d) | 2027-10-26 → 2027-10-31 (+5d) | -106.45d → -110.65d |
| CON-LEG101-LR-5090 | Sand Surround for Secondary Irrigation [Local – 01 Segment-02] | 2027-10-26 → 2027-10-31 (+5d) | 2027-11-01 → 2027-11-06 (+5d) | -106.45d → -110.65d |
| CON-LEG101-LR-5160 | Installation of Micron Marker Magnetic Tape [Local – 01 Segment-02] | 2027-11-01 → 2027-11-06 (+5d) | 2027-11-07 → 2027-11-11 (+4d) | -106.45d → -110.65d |
| CON-LEG101-LR-5220 | Backfilling to Subgrade Elevation [Local – 01 Segment-02] | 2027-11-07 → 2027-11-11 (+4d) | 2027-11-13 → 2027-11-17 (+4d) | -106.45d → -110.65d |
| CON-LEG101-LR-5420 | Installation of tubing for risers connections from laterals [Local – 01 Segment-02] | 2027-11-13 → 2027-11-17 (+4d) | 2027-12-02 → 2027-12-07 (+5d) | -106.45d → -110.65d |
| 2 | **Valves and Controller** | 2027-12-19 → 2027-12-23 (+4d) | 2028-01-08 → 2028-01-12 (+4d) |  |
| CON-LEG101-LR-5360 | Installation of a Flush valve [Local – 01 Segment-02] | 2027-12-19 → 2027-12-23 (+4d) | 2027-12-25 → 2027-12-29 (+4d) | -98.45d → -102.65d |
| CON-LEG101-LR-5530 | Installation of Decoder cables 12 AWG between valves and controllers [Local – 01 Segment-02] | 2027-12-25 → 2027-12-29 (+4d) | 2028-01-08 → 2028-01-12 (+4d) | -98.45d → -102.65d |
| 14 | **Curbs and edging** | 2028-01-08 → 2028-01-12 (+4d) | 2028-01-10 → 2028-01-15 (+5d) |  |
| CON-LEG101-LR-4800 | Installation of Curbs and edging [Local – 01 Segment-02] | 2028-01-08 → 2028-01-12 (+4d) | 2028-01-10 → 2028-01-15 (+5d) | -98.45d → -102.65d |
| 13 | **Landscape** | 2028-01-10 → 2028-01-15 (+5d) | 2028-02-10 → 2028-02-15 (+5d) |  |
| CON-LEG101-LR-4590 | Site preparation for Planting Area [Local – 01 Segment-02] | 2028-01-10 → 2028-01-15 (+5d) | 2028-01-20 → 2028-01-25 (+5d) | -98.45d → -102.65d |
| CON-LEG101-LR-4660 | Placing Agricutural Soil [Local – 01 Segment-02] | 2028-01-20 → 2028-01-25 (+5d) | 2028-01-31 → 2028-02-05 (+5d) | -98.45d → -102.65d |
| CON-LEG101-LR-4730 | Planting Shrubs And Ground Cover [Local – 01 Segment-02] | 2028-01-31 → 2028-02-05 (+5d) | 2028-02-10 → 2028-02-15 (+5d) | -98.45d → -102.65d |
| 3 | **LOCAL - 01 Segment-03 (From 2+133 to 3+200)** | 2027-12-02 → 2027-12-07 (+5d) | 2028-02-12 → 2028-02-16 (+4d) |  |
| 2 | **Irrigation Works** | 2027-12-02 → 2027-12-07 (+5d) | 2028-02-06 → 2028-02-10 (+4d) |  |
| 1 | **Secondary Irrigation** | 2027-12-02 → 2027-12-07 (+5d) | 2028-02-06 → 2028-02-10 (+4d) |  |
| 1 | **Pipe Work** | 2027-12-02 → 2027-12-07 (+5d) | 2028-02-06 → 2028-02-10 (+4d) |  |
| CON-LEG101-LR-4890 | Excavation for Secondary Irrigation [Local – 01 Segment-03] | 2027-12-02 → 2027-12-07 (+5d) | 2027-12-08 → 2027-12-13 (+5d) | -106.45d → -110.65d |

| ID | Task | Start | Finish | Total float |
| --- | --- | --- | --- | --- |
| CON-LEG101-LR-4960 | Sand bedding for Secondary Irrigation [Local – 01 Segment-03] | 2027-12-08 → 2027-12-13 (+5d) | 2027-12-14 → 2027-12-19 (+5d) | -99.45d → -103.65d |
| CON-LEG101-LR-5030 | Installation of Pipe for Secondary Irrigation [Local – 01 Segment-03] | 2027-12-14 → 2027-12-19 (+5d) | 2027-12-20 → 2027-12-25 (+5d) | -99.45d → -103.65d |
| CON-LEG101-LR-5100 | Sand Surround for Secondary Irrigation [Local – 01 Segment-03] | 2027-12-20 → 2027-12-25 (+5d) | 2027-12-29 → 2028-01-03 (+5d) | -94.45d → -98.65d |
| CON-LEG101-LR-5170 | Installation of Micron Marker Magnetic Tape [Local – 01 Segment-03] | 2027-12-29 → 2028-01-03 (+5d) | 2028-01-08 → 2028-01-12 (+4d) | -94.45d → -98.65d |
| CON-LEG101-LR-5230 | Backfilling to Subgrade Elevation [Local – 01 Segment-03] | 2028-01-08 → 2028-01-12 (+4d) | 2028-01-17 → 2028-01-22 (+5d) | -94.45d → -98.65d |
| CON-LEG101-LR-5430 | Installation of tubing for risers connections from laterals [Local – 01 Segment-03] | 2028-01-17 → 2028-01-22 (+5d) | 2028-02-06 → 2028-02-10 (+4d) | -94.45d → -98.65d |
| 2 | **Valves and Controller** | 2027-12-20 → 2027-12-25 (+5d) | 2028-01-09 → 2028-01-13 (+4d) |  |
| CON-LEG101-LR-5370 | Installation of a Flush valve [Local – 01 Segment-03] | 2027-12-20 → 2027-12-25 (+5d) | 2027-12-26 → 2027-12-30 (+4d) | -99.45d → -103.65d |
| CON-LEG101-LR-5540 | Installation of Decoder cables 12 AWG between valves and controllers [Local – 01 Segment-03] | 2027-12-26 → 2027-12-30 (+4d) | 2028-01-09 → 2028-01-13 (+4d) | -99.45d → -103.65d |
| 14 | **Curbs and edging** | 2028-01-09 → 2028-01-13 (+4d) | 2028-01-11 → 2028-01-16 (+5d) |  |
| CON-LEG101-LR-4810 | Installation of Curbs and edging [Local – 01 Segment-03] | 2028-01-09 → 2028-01-13 (+4d) | 2028-01-11 → 2028-01-16 (+5d) | -99.45d → -103.65d |
| 13 | **Landscape** | 2028-01-11 → 2028-01-16 (+5d) | 2028-02-12 → 2028-02-16 (+4d) |  |
| CON-LEG101-LR-4600 | Site preparation for Planting Area [Local – 01 Segment-03] | 2028-01-11 → 2028-01-16 (+5d) | 2028-01-22 → 2028-01-26 (+4d) | -99.45d → -103.65d |
| CON-LEG101-LR-4670 | Placing Agricutural Soil [Local – 01 Segment-03] | 2028-01-22 → 2028-01-26 (+4d) | 2028-02-01 → 2028-02-06 (+5d) | -99.45d → -103.65d |
| CON-LEG101-LR-4740 | Planting Shrubs And Ground Cover [Local – 01 Segment-03] | 2028-02-01 → 2028-02-06 (+5d) | 2028-02-12 → 2028-02-16 (+4d) | -99.45d → -103.65d |
| 3 | **Local – 02** | 2027-12-08 → 2027-12-13 (+5d) | 2028-02-20 → 2028-02-24 (+4d) |  |
| 3 | **Irrigation Works** | 2027-12-08 → 2027-12-13 (+5d) | 2028-02-08 → 2028-02-13 (+5d) |  |
| 1 | **Secondary Irrigation** | 2027-12-08 → 2027-12-13 (+5d) | 2028-02-08 → 2028-02-13 (+5d) |  |
| 1 | **Pipe Work** | 2027-12-08 → 2027-12-13 (+5d) | 2028-02-08 → 2028-02-13 (+5d) |  |
| CON-LEG101-LR-4900 | Excavation for Secondary Irrigation [Local – 02 ] | 2027-12-08 → 2027-12-13 (+5d) | 2027-12-13 → 2027-12-18 (+5d) | -106.45d → -110.65d |
| CON-LEG101-LR-4970 | Sand bedding for Secondary Irrigation [Local – 02 ] | 2027-12-13 → 2027-12-18 (+5d) | 2027-12-18 → 2027-12-22 (+4d) | -106.45d → -110.65d |
| CON-LEG101-LR-5040 | Installation of Pipe for Secondary Irrigation [Local – 02 ] | 2027-12-18 → 2027-12-22 (+4d) | 2027-12-22 → 2027-12-27 (+5d) | -106.45d → -110.65d |
| CON-LEG101-LR-5110 | Sand Surround for Secondary Irrigation [Local – 02 ] | 2027-12-22 → 2027-12-27 (+5d) | 2028-01-01 → 2028-01-05 (+4d) | -96.45d → -100.65d |
| CON-LEG101-LR-5180 | Installation of Micron Marker Magnetic Tape [Local – 02 ] | 2028-01-01 → 2028-01-05 (+4d) | 2028-01-10 → 2028-01-15 (+5d) | -96.45d → -100.65d |
| CON-LEG101-LR-5240 | Backfilling to Subgrade Elevation [Local – 02 ] | 2028-01-10 → 2028-01-15 (+5d) | 2028-01-22 → 2028-01-26 (+4d) | -96.45d → -100.65d |
| CON-LEG101-LR-5440 | Installation of tubing for risers connections from laterals [Local – 02 ] | 2028-01-22 → 2028-01-26 (+4d) | 2028-02-08 → 2028-02-13 (+5d) | -96.45d → -100.65d |
| 2 | **Valves and Controller** | 2027-12-22 → 2027-12-27 (+5d) | 2028-01-26 → 2028-01-31 (+5d) |  |
| CON-LEG101-LR-5280 | Installation of Electrical Solenoid Valve [Local – 02 ] | 2027-12-22 → 2027-12-27 (+5d) | 2027-12-28 → 2028-01-02 (+5d) | -106.45d → -110.65d |
| CON-LEG101-LR-5320 | Installation of quick coupler valve [Local – 02 ] | 2027-12-28 → 2028-01-02 (+5d) | 2028-01-03 → 2028-01-08 (+5d) | -106.45d → -110.65d |
| CON-LEG101-LR-5380 | Installation of a Flush valve [Local – 02 ] | 2028-01-03 → 2028-01-08 (+5d) | 2028-01-08 → 2028-01-12 (+4d) | -106.45d → -110.65d |
| CON-LEG101-LR-5490 | Install single station decoder for valve connection [Local – 02 ] | 2028-01-08 → 2028-01-12 (+4d) | 2028-01-16 → 2028-01-20 (+4d) | -106.45d → -110.65d |
| CON-LEG101-LR-5550 | Installation of Decoder cables 12 AWG between valves and controllers [Local – 02 ] | 2028-01-16 → 2028-01-20 (+4d) | 2028-01-26 → 2028-01-31 (+5d) | -106.45d → -110.65d |
| 14 | **Curbs and edging** | 2028-01-26 → 2028-01-31 (+5d) | 2028-01-30 → 2028-02-03 (+4d) |  |
| CON-LEG101-LR-4830 | Installation of Curbs and edging [Local – 02 ] | 2028-01-26 → 2028-01-31 (+5d) | 2028-01-30 → 2028-02-03 (+4d) | -106.45d → -110.65d |
| 13 | **Landscape** | 2028-01-30 → 2028-02-03 (+4d) | 2028-02-20 → 2028-02-24 (+4d) |  |
| CON-LEG101-LR-4610 | Site preparation for Planting Area [Local – 02 ] | 2028-01-30 → 2028-02-03 (+4d) | 2028-02-06 → 2028-02-10 (+4d) | -106.45d → -110.65d |
| CON-LEG101-LR-4680 | Placing Agricutural Soil [Local – 02 ] | 2028-02-06 → 2028-02-10 (+4d) | 2028-02-13 → 2028-02-17 (+4d) | -106.45d → -110.65d |
| CON-LEG101-LR-4750 | Planting Shrubs And Ground Cover [Local – 02 ] | 2028-02-13 → 2028-02-17 (+4d) | 2028-02-20 → 2028-02-24 (+4d) | -106.45d → -110.65d |
| 5 | **Local – 04** | 2027-12-08 → 2027-12-13 (+5d) | 2028-02-10 → 2028-02-15 (+5d) |  |
| 2 | **Irrigation Works** | 2027-12-08 → 2027-12-13 (+5d) | 2028-01-27 → 2028-02-01 (+5d) |  |
| 1 | **Secondary Irrigation** | 2027-12-08 → 2027-12-13 (+5d) | 2028-01-27 → 2028-02-01 (+5d) |  |
| 1 | **Pipe Work** | 2027-12-08 → 2027-12-13 (+5d) | 2028-01-11 → 2028-01-16 (+5d) |  |
| CON-LEG101-LR-4910 | Excavation for Secondary Irrigation [Local – 04 ] | 2027-12-08 → 2027-12-13 (+5d) | 2027-12-12 → 2027-12-16 (+4d) | -99.45d → -103.65d |
| CON-LEG101-LR-4980 | Sand bedding for Secondary Irrigation [Local – 04 ] | 2027-12-12 → 2027-12-16 (+4d) | 2027-12-19 → 2027-12-23 (+4d) | -98.45d → -102.65d |
| CON-LEG101-LR-5050 | Installation of Pipe for Secondary Irrigation [Local – 04 ] | 2027-12-19 → 2027-12-23 (+4d) | 2027-12-28 → 2028-01-02 (+5d) | -98.45d → -102.65d |
| CON-LEG101-LR-5120 | Sand Surround for Secondary Irrigation [Local – 04 ] | 2027-12-28 → 2028-01-02 (+5d) | 2028-01-01 → 2028-01-05 (+4d) | -98.45d → -102.65d |
| CON-LEG101-LR-5190 | Installation of Micron Marker Magnetic Tape [Local – 04 ] | 2028-01-01 → 2028-01-05 (+4d) | 2028-01-06 → 2028-01-11 (+5d) | -98.45d → -102.65d |
| CON-LEG101-LR-5250 | Backfilling to Subgrade Elevation [Local – 04 ] | 2028-01-06 → 2028-01-11 (+5d) | 2028-01-09 → 2028-01-13 (+4d) | -98.45d → -102.65d |
| CON-LEG101-LR-5450 | Installation of tubing for risers connections from laterals [Local – 04 ] | 2028-01-09 → 2028-01-13 (+4d) | 2028-01-11 → 2028-01-16 (+5d) | -98.45d → -102.65d |
| 2 | **Valves and Controller** | 2027-12-28 → 2028-01-02 (+5d) | 2028-01-27 → 2028-02-01 (+5d) |  |
| CON-LEG101-LR-5290 | Installation of Electrical Solenoid Valve [Local – 04 ] | 2027-12-28 → 2028-01-02 (+5d) | 2028-01-04 → 2028-01-09 (+5d) | -98.45d → -102.65d |
| CON-LEG101-LR-5330 | Installation of quick coupler valve [Local – 04 ] | 2028-01-04 → 2028-01-09 (+5d) | 2028-01-11 → 2028-01-16 (+5d) | -98.45d → -102.65d |
| CON-LEG101-LR-5390 | Installation of a Flush valve [Local – 04 ] | 2028-01-11 → 2028-01-16 (+5d) | 2028-01-17 → 2028-01-22 (+5d) | -98.45d → -102.65d |
| CON-LEG101-LR-5500 | Install single station decoder for valve connection [Local – 04 ] | 2028-01-17 → 2028-01-22 (+5d) | 2028-01-25 → 2028-01-30 (+5d) | -98.45d → -102.65d |
| CON-LEG101-LR-5560 | Installation of Decoder cables 12 AWG between valves and controllers [Local – 04 ] | 2028-01-25 → 2028-01-30 (+5d) | 2028-01-27 → 2028-02-01 (+5d) | -98.45d → -102.65d |
| 14 | **Curbs and edging** | 2028-01-27 → 2028-02-01 (+5d) | 2028-01-31 → 2028-02-05 (+5d) |  |
| CON-LEG101-LR-4840 | Installation of Curbs and edging [Local – 04 ] | 2028-01-27 → 2028-02-01 (+5d) | 2028-01-31 → 2028-02-05 (+5d) | -98.45d → -102.65d |
| 13 | **Landscape** | 2028-01-31 → 2028-02-05 (+5d) | 2028-02-10 → 2028-02-15 (+5d) |  |
| CON-LEG101-LR-4620 | Site preparation for Planting Area [Local – 04 ] | 2028-01-31 → 2028-02-05 (+5d) | 2028-02-03 → 2028-02-08 (+5d) | -98.45d → -102.65d |
| CON-LEG101-LR-4690 | Placing Agricutural Soil [Local – 04 ] | 2028-02-03 → 2028-02-08 (+5d) | 2028-02-07 → 2028-02-12 (+5d) | -98.45d → -102.65d |
| CON-LEG101-LR-4760 | Planting Shrubs And Ground Cover [Local – 04 ] | 2028-02-07 → 2028-02-12 (+5d) | 2028-02-10 → 2028-02-15 (+5d) | -98.45d → -102.65d |
| 6 | **Local – 06** | 2027-12-08 → 2027-12-13 (+5d) | 2028-02-12 → 2028-02-16 (+4d) |  |
| 2 | **Irrigation Works** | 2027-12-08 → 2027-12-13 (+5d) | 2028-01-25 → 2028-01-30 (+5d) |  |
| 1 | **Secondary Irrigation** | 2027-12-08 → 2027-12-13 (+5d) | 2028-01-25 → 2028-01-30 (+5d) |  |
| 1 | **Pipe Work** | 2027-12-08 → 2027-12-13 (+5d) | 2027-12-28 → 2028-01-02 (+5d) |  |
| CON-LEG101-LR-4920 | Excavation for Secondary Irrigation [Local – 06 ] | 2027-12-08 → 2027-12-13 (+5d) | 2027-12-12 → 2027-12-16 (+4d) | -99.45d → -103.65d |
| CON-LEG101-LR-5060 | Installation of Pipe for Secondary Irrigation [Local – 06 ] | 2027-12-12 → 2027-12-16 (+4d) | 2027-12-15 → 2027-12-20 (+5d) | -99.45d → -103.65d |
| CON-LEG101-LR-5260 | Backfilling to Subgrade Elevation [Local – 06 ] | 2027-12-15 → 2027-12-20 (+5d) | 2027-12-19 → 2027-12-23 (+4d) | -99.45d → -103.65d |
| CON-LEG101-LR-5460 | Installation of tubing for risers connections from laterals [Local – 06 ] | 2027-12-19 → 2027-12-23 (+4d) | 2027-12-28 → 2028-01-02 (+5d) | -99.45d → -103.65d |
| 2 | **Valves and Controller** | 2027-12-28 → 2028-01-02 (+5d) | 2028-01-25 → 2028-01-30 (+5d) |  |

| ID | Task | Start | Finish | Total float |
| --- | --- | --- | --- | --- |
| CON-LEG101-LR-5300 | Installation of Electrical Solenoid Valve [Local – 06 ] | 2027-12-28 → 2028-01-02 (+5d) | 2028-01-02 → 2028-01-06 (+4d) | -99.45d → -103.65d |
| CON-LEG101-LR-5340 | Installation of quick coupler valve [Local – 06 ] | 2028-01-02 → 2028-01-06 (+4d) | 2028-01-06 → 2028-01-11 (+5d) | -99.45d → -103.65d |
| CON-LEG101-LR-5400 | Installation of a Flush valve [Local – 06 ] | 2028-01-06 → 2028-01-11 (+5d) | 2028-01-12 → 2028-01-17 (+5d) | -99.45d → -103.65d |
| CON-LEG101-LR-5510 | Install single station decoder for valve connection [Local – 06 ] | 2028-01-12 → 2028-01-17 (+5d) | 2028-01-18 → 2028-01-23 (+5d) | -99.45d → -103.65d |
| CON-LEG101-LR-5570 | Installation of Decoder cables 12 AWG between valves and controllers [Local – 06 ] | 2028-01-18 → 2028-01-23 (+5d) | 2028-01-25 → 2028-01-30 (+5d) | -99.45d → -103.65d |
| 14 | **Curbs and edging** | 2028-01-25 → 2028-01-30 (+5d) | 2028-01-29 → 2028-02-02 (+4d) |  |
| CON-LEG101-LR-4850 | Installation of Curbs and edging [Local – 06 ] | 2028-01-25 → 2028-01-30 (+5d) | 2028-01-29 → 2028-02-02 (+4d) | -99.45d → -103.65d |
| 13 | **Landscape** | 2028-01-29 → 2028-02-02 (+4d) | 2028-02-12 → 2028-02-16 (+4d) |  |
| CON-LEG101-LR-4630 | Site preparation for Planting Area [Local – 06 ] | 2028-01-29 → 2028-02-02 (+4d) | 2028-02-02 → 2028-02-07 (+5d) | -99.45d → -103.65d |
| CON-LEG101-LR-4700 | Placing Agricutural Soil [Local – 06 ] | 2028-02-02 → 2028-02-07 (+5d) | 2028-02-07 → 2028-02-12 (+5d) | -99.45d → -103.65d |
| CON-LEG101-LR-4770 | Planting Shrubs And Ground Cover [Local – 06 ] | 2028-02-07 → 2028-02-12 (+5d) | 2028-02-12 → 2028-02-16 (+4d) | -99.45d → -103.65d |
| 1 | **Roundabout - 01 (L01 & L04)** | 2027-10-13 → 2027-10-20 (+7d) | 2028-04-08 → 2028-04-15 (+7d) |  |
| 1 | **Irrigation Works** | 2027-10-13 → 2027-10-20 (+7d) | 2028-02-01 → 2028-02-08 (+7d) |  |
| 1 | **Secondary Irrigation** | 2027-10-13 → 2027-10-20 (+7d) | 2028-02-01 → 2028-02-08 (+7d) |  |
| 1 | **Pipe Work** | 2027-10-13 → 2027-10-20 (+7d) | 2028-02-01 → 2028-02-08 (+7d) |  |
| CON-LEG101-RA-1120 | Excavation for Secondary Irrigation [Roundabout : 01 ] | 2027-10-13 → 2027-10-20 (+7d) | 2027-10-25 → 2027-11-01 (+7d) | -157d → -163d |
| CON-LEG101-RA-1150 | Sand bedding for Secondary Irrigation [Roundabout : 01 ] | 2027-10-26 → 2027-11-02 (+7d) | 2027-11-07 → 2027-11-14 (+7d) | -157d → -163d |
| CON-LEG101-RA-1180 | Installation of Pipe for Secondary Irrigation [Roundabout : 01 ] | 2027-11-08 → 2027-11-15 (+7d) | 2027-11-20 → 2027-11-27 (+7d) | -157d → -163d |
| CON-LEG101-RA-1210 | Sand Surround for Secondary Irrigation [Roundabout : 01 ] | 2027-11-21 → 2027-11-28 (+7d) | 2027-12-06 → 2027-12-13 (+7d) | -148d → -154d |
| CON-LEG101-RA-1240 | Installation of Micron Marker Magnetic Tape [Roundabout : 01 ] | 2027-12-07 → 2027-12-14 (+7d) | 2027-12-22 → 2027-12-29 (+7d) | -148d → -154d |
| CON-LEG101-RA-1270 | Backfilling to Subgrade Elevation [Roundabout : 01 ] | 2027-12-23 → 2027-12-30 (+7d) | 2028-01-08 → 2028-01-15 (+7d) | -148d → -154d |
| CON-LEG101-RA-1390 | Installation of tubing for risers connections from laterals [Roundabout : 01 ] | 2028-01-09 → 2028-01-16 (+7d) | 2028-02-01 → 2028-02-08 (+7d) | -148d → -154d |
| 2 | **Valves and Controller** | 2027-11-21 → 2027-11-28 (+7d) | 2028-01-16 → 2028-01-23 (+7d) |  |
| CON-LEG101-RA-1300 | Installation of Electrical Solenoid Valve [Roundabout : 01 ] | 2027-11-21 → 2027-11-28 (+7d) | 2027-11-25 → 2027-12-02 (+7d) | -157d → -163d |
| CON-LEG101-RA-1330 | Installation of quick coupler valve [Roundabout : 01 ] | 2027-11-27 → 2027-12-04 (+7d) | 2027-12-01 → 2027-12-08 (+7d) | -157d → -163d |
| CON-LEG101-RA-1360 | Installation of a Flush valve [Roundabout : 01 ] | 2027-12-02 → 2027-12-09 (+7d) | 2027-12-14 → 2027-12-21 (+7d) | -157d → -163d |
| CON-LEG101-RA-1420 | Install single station decoder for valve connection [Roundabout : 01 ] | 2027-12-15 → 2027-12-22 (+7d) | 2027-12-30 → 2028-01-06 (+7d) | -146d → -152d |
| A | Catch | 2028-01-01 → 2028-01-08 (+7d) | 2028-01-16 → 2028-01-23 (+7d) | -146d → -152d |
| 3 | **Curbs and edging** | 2028-01-17 → 2028-01-24 (+7d) | 2028-01-30 → 2028-02-06 (+7d) |  |
| CON-LEG101-RA-1090 | Installation of Curbs and edging [Roundabout : 01 ] | 2028-01-17 → 2028-01-24 (+7d) | 2028-01-30 → 2028-02-06 (+7d) | -146d → -152d |
| 2 | **Landscape** | 2028-02-02 → 2028-02-09 (+7d) | 2028-04-08 → 2028-04-15 (+7d) |  |
| CON-LEG101-RA-1000 | Site preparation for Planting Area [Roundabout : 01 ] | 2028-02-02 → 2028-02-09 (+7d) | 2028-02-23 → 2028-03-01 (+7d) | -148d → -154d |
| CON-LEG101-RA-1030 | Placing Agricutural Soil [Roundabout : 01 ] | 2028-02-24 → 2028-03-02 (+7d) | 2028-03-16 → 2028-03-23 (+7d) | -148d → -154d |
| CON-LEG101-RA-1060 | Planting Shrubs And Ground Cover [Roundabout : 01 ] | 2028-03-18 → 2028-03-25 (+7d) | 2028-04-08 → 2028-04-15 (+7d) | -148d → -154d |
| 4 | **Roundabout - 02 (L01 & L03)** | 2027-12-15 → 2027-12-22 (+7d) | 2028-04-18 → 2028-04-25 (+7d) |  |
| 1 | **Irrigation Works** | 2027-12-15 → 2027-12-22 (+7d) | 2028-04-04 → 2028-04-11 (+7d) |  |
| 1 | **Secondary Irrigation** | 2027-12-15 → 2027-12-22 (+7d) | 2028-04-04 → 2028-04-11 (+7d) |  |
| 1 | **Pipe Work** | 2027-12-15 → 2027-12-22 (+7d) | 2028-04-04 → 2028-04-11 (+7d) |  |
| CON-LEG101-RA-1130 | Excavation for Secondary Irrigation [Roundabout : 02 ] | 2027-12-15 → 2027-12-22 (+7d) | 2027-12-27 → 2028-01-03 (+7d) | -157d → -163d |
| CON-LEG101-RA-1160 | Sand bedding for Secondary Irrigation [Roundabout : 02 ] | 2027-12-28 → 2028-01-04 (+7d) | 2028-01-09 → 2028-01-16 (+7d) | -157d → -163d |
| CON-LEG101-RA-1190 | Installation of Pipe for Secondary Irrigation [Roundabout : 02 ] | 2028-01-10 → 2028-01-17 (+7d) | 2028-01-22 → 2028-01-29 (+7d) | -157d → -163d |
| CON-LEG101-RA-1220 | Sand Surround for Secondary Irrigation [Roundabout : 02 ] | 2028-01-23 → 2028-01-30 (+7d) | 2028-02-07 → 2028-02-14 (+7d) | -145d → -151d |
| CON-LEG101-RA-1250 | Installation of Micron Marker Magnetic Tape [Roundabout : 02 ] | 2028-02-08 → 2028-02-15 (+7d) | 2028-02-23 → 2028-03-01 (+7d) | -145d → -151d |
| CON-LEG101-RA-1280 | Backfilling to Subgrade Elevation [Roundabout : 02 ] | 2028-02-24 → 2028-03-02 (+7d) | 2028-03-11 → 2028-03-18 (+7d) | -145d → -151d |
| CON-LEG101-RA-1400 | Installation of tubing for risers connections from laterals [Roundabout : 02 ] | 2028-03-12 → 2028-03-19 (+7d) | 2028-04-04 → 2028-04-11 (+7d) | -145d → -151d |
| 2 | **Valves and Controller** | 2028-01-23 → 2028-01-30 (+7d) | 2028-03-11 → 2028-03-18 (+7d) |  |
| CON-LEG101-RA-1310 | Installation of Electrical Solenoid Valve [Roundabout : 02 ] | 2028-01-23 → 2028-01-30 (+7d) | 2028-01-27 → 2028-02-03 (+7d) | -157d → -163d |
| CON-LEG101-RA-1340 | Installation of quick coupler valve [Roundabout : 02 ] | 2028-01-29 → 2028-02-05 (+7d) | 2028-02-02 → 2028-02-09 (+7d) | -157d → -163d |
| CON-LEG101-RA-1370 | Installation of a Flush valve [Roundabout : 02 ] | 2028-02-03 → 2028-02-10 (+7d) | 2028-02-15 → 2028-02-22 (+7d) | -157d → -163d |
| CON-LEG101-RA-1430 | Install single station decoder for valve connection [Roundabout : 02 ] | 2028-02-16 → 2028-02-23 (+7d) | 2028-02-23 → 2028-03-01 (+7d) | -157d → -163d |
| CON-LEG101-RA-1460 | Installation of Decoder cables 12 AWG between valves and controllers [Roundabout : 02 ] | 2028-02-24 → 2028-03-02 (+7d) | 2028-03-11 → 2028-03-18 (+7d) | -157d → -163d |
| 3 | **Curbs and edging** | 2028-03-12 → 2028-03-19 (+7d) | 2028-03-14 → 2028-03-21 (+7d) |  |
| CON-LEG101-RA-1100 | Installation of Curbs and edging [Roundabout : 02 ] | 2028-03-12 → 2028-03-19 (+7d) | 2028-03-14 → 2028-03-21 (+7d) | -157d → -163d |
| 2 | **Landscape** | 2028-03-15 → 2028-03-22 (+7d) | 2028-04-18 → 2028-04-25 (+7d) |  |
| CON-LEG101-RA-1010 | Site preparation for Planting Area [Roundabout : 02 ] | 2028-03-15 → 2028-03-22 (+7d) | 2028-03-26 → 2028-04-02 (+7d) | -157d → -163d |
| CON-LEG101-RA-1040 | Placing Agricutural Soil [Roundabout : 02 ] | 2028-03-27 → 2028-04-03 (+7d) | 2028-04-06 → 2028-04-13 (+7d) | -157d → -163d |
| CON-LEG101-RA-1070 | Planting Shrubs And Ground Cover [Roundabout : 02 ] | 2028-04-08 → 2028-04-15 (+7d) | 2028-04-18 → 2028-04-25 (+7d) | -157d → -163d |
| 2 | **Roundabout - 03 (L03 & L05)** | 2027-12-28 → 2028-01-04 (+7d) | 2028-04-18 → 2028-04-25 (+7d) |  |
| 1 | **Irrigation Works** | 2027-12-28 → 2028-01-04 (+7d) | 2028-04-03 → 2028-04-10 (+7d) |  |
| 1 | **Secondary Irrigation** | 2027-12-28 → 2028-01-04 (+7d) | 2028-04-03 → 2028-04-10 (+7d) |  |
| 1 | **Pipe Work** | 2027-12-28 → 2028-01-04 (+7d) | 2028-04-03 → 2028-04-10 (+7d) |  |
| CON-LEG101-RA-1140 | Excavation for Secondary Irrigation [Roundabout : 03 ] | 2027-12-28 → 2028-01-04 (+7d) | 2028-01-09 → 2028-01-16 (+7d) | -157d → -163d |
| CON-LEG101-RA-1170 | Sand bedding for Secondary Irrigation [Roundabout : 03 ] | 2028-01-10 → 2028-01-17 (+7d) | 2028-01-20 → 2028-01-27 (+7d) | -157d → -163d |
| CON-LEG101-RA-1200 | Installation of Pipe for Secondary Irrigation [Roundabout : 03 ] | 2028-01-22 → 2028-01-29 (+7d) | 2028-02-02 → 2028-02-09 (+7d) | -157d → -163d |
| CON-LEG101-RA-1230 | Sand Surround for Secondary Irrigation [Roundabout : 03 ] | 2028-02-03 → 2028-02-10 (+7d) | 2028-02-15 → 2028-02-22 (+7d) | -144d → -150d |
| CON-LEG101-RA-1260 | Installation of Micron Marker Magnetic Tape [Roundabout : 03 ] | 2028-02-16 → 2028-02-23 (+7d) | 2028-02-28 → 2028-03-06 (+7d) | -144d → -150d |
| CON-LEG101-RA-1290 | Backfilling to Subgrade Elevation [Roundabout : 03 ] | 2028-02-29 → 2028-03-07 (+7d) | 2028-03-12 → 2028-03-19 (+7d) | -144d → -150d |
| CON-LEG101-RA-1410 | Installation of tubing for risers connections from laterals [Roundabout : 03 ] | 2028-03-13 → 2028-03-20 (+7d) | 2028-04-03 → 2028-04-10 (+7d) | -144d → -150d |
| 2 | **Valves and Controller** | 2028-02-03 → 2028-02-10 (+7d) | 2028-03-22 → 2028-03-29 (+7d) |  |
| CON-LEG101-RA-1320 | Installation of Electrical Solenoid Valve [Roundabout : 03 ] | 2028-02-03 → 2028-02-10 (+7d) | 2028-02-08 → 2028-02-15 (+7d) | -157d → -163d |

| ID | Task | Start | Finish | Total float |
| --- | --- | --- | --- | --- |
| CON-LEG101-RA-1350 | Installation of quick coupler valve [Roundabout : 03 ] | 2028-02-09 → 2028-02-16 (+7d) | 2028-02-14 → 2028-02-21 (+7d) | -157d → -163d |
| CON-LEG101-RA-1380 | Installation of a Flush valve [Roundabout : 03 ] | 2028-02-15 → 2028-02-22 (+7d) | 2028-02-27 → 2028-03-05 (+7d) | -157d → -163d |
| CON-LEG101-RA-1440 | Install single station decoder for valve connection [Roundabout : 03 ] | 2028-02-28 → 2028-03-06 (+7d) | 2028-03-06 → 2028-03-13 (+7d) | -157d → -163d |
| CON-LEG101-RA-1470 | Installation of Decoder cables 12 AWG between valves and controllers [Roundabout : 03 ] | 2028-03-07 → 2028-03-14 (+7d) | 2028-03-22 → 2028-03-29 (+7d) | -157d → -163d |
| 3 | **Curbs and edging** | 2028-03-23 → 2028-03-30 (+7d) | 2028-03-26 → 2028-04-02 (+7d) |  |
| CON-LEG101-RA-1110 | Installation of Curbs and edging [Roundabout : 03 ] | 2028-03-23 → 2028-03-30 (+7d) | 2028-03-26 → 2028-04-02 (+7d) | -157d → -163d |
| 2 | **Landscape** | 2028-03-27 → 2028-04-03 (+7d) | 2028-04-18 → 2028-04-25 (+7d) |  |
| CON-LEG101-RA-1020 | Site preparation for Planting Area [Roundabout : 03 ] | 2028-03-27 → 2028-04-03 (+7d) | 2028-04-03 → 2028-04-10 (+7d) | -157d → -163d |
| CON-LEG101-RA-1050 | Placing Agricutural Soil [Roundabout : 03 ] | 2028-04-04 → 2028-04-11 (+7d) | 2028-04-10 → 2028-04-17 (+7d) | -157d → -163d |
| CON-LEG101-RA-1080 | Planting Shrubs And Ground Cover [Roundabout : 03 ] | 2028-04-11 → 2028-04-18 (+7d) | 2028-04-18 → 2028-04-25 (+7d) | -157d → -163d |
| 6 | **Testing & Commissioning** |  | 2028-04-26 → 2028-05-03 (+7d) |  |
| CON-LEG101-TC-1020 | Test for Public Water Utility Distribution |  | 2027-12-13 → 2027-12-20 (+7d) | -83d → -89d |
| CON-LEG101-TC-1030 | Test for TSE Network |  | 2027-12-27 → 2028-01-03 (+7d) | -74.4d → -80.4d |
| CON-LEG101-TC-1040 | Test for Sanitary Sewerage |  | 2027-12-14 → 2027-12-21 (+7d) | -79.4d → -85.4d |
| CON-LEG101-TC-1050 | Test for Stormwater Utilities |  | 2027-12-16 → 2027-12-23 (+7d) | -79.4d → -85.4d |
| CON-LEG101-TC-1060 | Test for Bridge Work |  | 2027-12-20 → 2027-12-27 (+7d) | -74.4d → -80.4d |
| CON-LEG101-TC-1080 | Test for Fence & Gate |  | 2027-12-04 → 2027-12-09 (+5d) | -33.2d → -38.5d |
| CON-LEG101-TC-1000 | Test for Telecommunications Work |  | 2028-01-05 → 2028-01-12 (+7d) | -70.2d → -76.2d |
| CON-LEG101-TC-1010 | Test for Electrical Network |  | 2027-12-25 → 2028-01-01 (+7d) | -74.4d → -80.4d |
| CON-LEG101-TC-1070 | Test for CCTV feeding system and GSM |  | 2028-01-09 → 2028-01-16 (+7d) | -68d → -74d |
| CON-LEG101-TC-1100 | Test for Road Lighting |  | 2027-12-30 → 2028-01-06 (+7d) | -70.2d → -76.2d |
| CON-LEG101-TC-1110 | Test for Road Works |  | 2027-12-12 → 2027-12-19 (+7d) | -91.4d → -97.4d |
| CON-LEG101-TC-1120 | Test for Earthing System |  | 2028-01-13 → 2028-01-20 (+7d) | -68d → -74d |
| CON-LEG101-TC-1090 | Test for Irrigation and Landscape | 2028-04-19 → 2028-04-26 (+7d) | 2028-04-26 → 2028-05-03 (+7d) | -157d → -163d |
| 7 | **Project Close-out** | 2027-12-04 → 2027-12-09 (+5d) | 2028-05-20 → 2028-05-27 (+7d) |  |
| 1 | **As-Built DWGs** | 2027-12-04 → 2027-12-09 (+5d) | 2028-05-08 → 2028-05-15 (+7d) |  |
| 1 | **As-Built DWGs Submittal** | 2027-12-04 → 2027-12-09 (+5d) | 2028-05-02 → 2028-05-09 (+7d) |  |
| CON-LEG101-ABS-1080 | As-Built DWGs Submittal for Fence & Gate | 2027-12-04 → 2027-12-09 (+5d) | 2027-12-11 → 2027-12-16 (+5d) | -33.2d → -38.5d |
| CON-LEG101-ABS-1110 | As-Built DWGs Submittal for Road Works | 2027-12-12 → 2027-12-19 (+7d) | 2027-12-26 → 2028-01-02 (+7d) | -91.4d → -97.4d |
| CON-LEG101-ABS-1020 | As-Built DWGs Submittal for Public Water Utility Distribution | 2027-12-14 → 2027-12-21 (+7d) | 2027-12-27 → 2028-01-03 (+7d) | -83d → -89d |
| CON-LEG101-ABS-1050 | As-Built DWGs Submittal for Stormwater Utilities | 2027-12-16 → 2027-12-23 (+7d) | 2027-12-30 → 2028-01-06 (+7d) | -79.4d → -85.4d |
| CON-LEG101-ABS-1060 | As-Built DWGs Submittal for Bridge Work | 2027-12-20 → 2027-12-27 (+7d) | 2028-01-03 → 2028-01-10 (+7d) | -68.2d → -74.2d |
| CON-LEG101-ABS-1030 | As-Built DWGs Submittal for TSE Network | 2027-12-27 → 2028-01-03 (+7d) | 2028-01-10 → 2028-01-17 (+7d) | -74.4d → -80.4d |
| CON-LEG101-ABS-1040 | As-Built DWGs Submittal for Sanitary Sewerage | 2027-12-30 → 2028-01-06 (+7d) | 2028-01-13 → 2028-01-20 (+7d) | -79.4d → -85.4d |
| CON-LEG101-ABS-1100 | As-Built DWGs Submittal for Road Lighting | 2028-01-01 → 2028-01-08 (+7d) | 2028-01-13 → 2028-01-20 (+7d) | -68d → -74d |
| CON-LEG101-ABS-1000 | As-Built DWGs Submittal for Telecommunications Work | 2028-01-05 → 2028-01-12 (+7d) | 2028-01-19 → 2028-01-26 (+7d) | -70.2d → -76.2d |
| CON-LEG101-ABS-1070 | As-Built DWGs Submittal for CCTV feeding system and GSM | 2028-01-09 → 2028-01-16 (+7d) | 2028-01-18 → 2028-01-25 (+7d) | -66.8d → -72.8d |
| CON-LEG101-ABS-1010 | As-Built DWGs Submittal for Electrical Network | 2028-01-13 → 2028-01-20 (+7d) | 2028-01-27 → 2028-02-03 (+7d) | -79.4d → -85.4d |
| CON-LEG101-ABS-1120 | As-Built DWGs Submittal for Earthing System | 2028-01-15 → 2028-01-22 (+7d) | 2028-01-19 → 2028-01-26 (+7d) | -68d → -74d |
| CON-LEG101-ABS-1090 | As-Built DWGs Submittal for Irrigation and Landscape | 2028-04-27 → 2028-05-04 (+7d) | 2028-05-02 → 2028-05-09 (+7d) | -157d → -163d |
| 2 | **As-Built DWGs Approval** | 2027-12-11 → 2027-12-16 (+5d) | 2028-05-08 → 2028-05-15 (+7d) |  |
| CON-LEG101-ABA-1080 | As- Built DWGs Approval for Fence & Gate | 2027-12-11 → 2027-12-16 (+5d) | 2027-12-16 → 2027-12-22 (+6d) | -33.2d → -38.5d |
| CON-LEG101-ABA-1110 | As- Built DWGs Approval for Road Works | 2027-12-26 → 2028-01-02 (+7d) | 2028-01-06 → 2028-01-13 (+7d) | -91.4d → -97.4d |
| CON-LEG101-ABA-1020 | As- Built DWGs Approval for Public Water Utility Distribution | 2028-01-06 → 2028-01-13 (+7d) | 2028-01-18 → 2028-01-25 (+7d) | -91.4d → -97.4d |
| CON-LEG101-ABA-1030 | As- Built DWGs Approval for TSE Network | 2028-01-10 → 2028-01-17 (+7d) | 2028-01-22 → 2028-01-29 (+7d) | -74.4d → -80.4d |
| CON-LEG101-ABA-1100 | As- Built DWGs Approval for Road Lighting | 2028-01-15 → 2028-01-22 (+7d) | 2028-01-25 → 2028-02-01 (+7d) | -68d → -74d |
| CON-LEG101-ABA-1050 | As- Built DWGs Approval for Stormwater Utilities | 2028-01-18 → 2028-01-25 (+7d) | 2028-01-30 → 2028-02-06 (+7d) | -91.4d → -97.4d |
| CON-LEG101-ABA-1070 | As- Built DWGs Approval for CCTV feeding system and GSM | 2028-01-18 → 2028-01-25 (+7d) | 2028-01-24 → 2028-01-31 (+7d) | -66.8d → -72.8d |
| CON-LEG101-ABA-1000 | As- Built DWGs Approval for Telecommunications Work | 2028-01-19 → 2028-01-26 (+7d) | 2028-01-29 → 2028-02-05 (+7d) | -70.2d → -76.2d |
| CON-LEG101-ABA-1120 | As- Built DWGs Approval for Earthing System | 2028-01-20 → 2028-01-27 (+7d) | 2028-01-25 → 2028-02-01 (+7d) | -68d → -74d |
| CON-LEG101-ABA-1060 | As- Built DWGs Approval for Bridge Work | 2028-01-30 → 2028-02-06 (+7d) | 2028-02-10 → 2028-02-17 (+7d) | -91.4d → -97.4d |
| CON-LEG101-ABA-1010 | As- Built DWGs Approval for Electrical Network | 2028-02-10 → 2028-02-17 (+7d) | 2028-02-22 → 2028-02-29 (+7d) | -91.4d → -97.4d |
| CON-LEG101-ABA-1040 | As- Built DWGs Approval for Sanitary Sewerage | 2028-02-10 → 2028-02-17 (+7d) | 2028-02-22 → 2028-02-29 (+7d) | -91.4d → -97.4d |
| CON-LEG101-ABA-1090 | As- Built DWGs Approval for Irrigation and Landscape | 2028-05-03 → 2028-05-10 (+7d) | 2028-05-08 → 2028-05-15 (+7d) | -157d → -163d |
| 2 | **Demobilization** | 2028-05-09 → 2028-05-16 (+7d) | 2028-05-20 → 2028-05-27 (+7d) |  |
| CON-LEG101-DM-1000 | Demobilization of Manpower | 2028-05-09 → 2028-05-16 (+7d) | 2028-05-14 → 2028-05-21 (+7d) | -157d → -163d |
| CON-LEG101-DM-1010 | Removal of Equipment from Site | 2028-05-09 → 2028-05-16 (+7d) | 2028-05-14 → 2028-05-21 (+7d) | -157d → -163d |
| CON-LEG101-DM-1020 | Site Clean Up | 2028-05-09 → 2028-05-16 (+7d) | 2028-05-14 → 2028-05-21 (+7d) | -157d → -163d |
| CON-LEG101-DM-1030 | Removal of Site Offices and Structures | 2028-05-09 → 2028-05-16 (+7d) | 2028-05-14 → 2028-05-21 (+7d) | -157d → -163d |
| CON-LEG101-DM-1040 | Restoration of Ground Surfaces | 2028-05-15 → 2028-05-22 (+7d) | 2028-05-20 → 2028-05-27 (+7d) | -157d → -163d |

## Version 6 (data date 2026-11-03, saved 2026-11-03, file 02. JDH1-02-003 -ENJ-WPR-050-03-11-2026 Update Schedule.xer)

Last finish 2028-05-27 → 2028-06-03 (+7d). Complete tasks 1288 → 1339.

Changed:

| ID | Task | Start | Finish | Complete | Total float |
| --- | --- | --- | --- | --- | --- |
| 5 | **Milestones** |  | 2028-05-27 → 2028-06-03 (+7d) |  |  |
| 1 | **Key Milestones** |  | 2028-05-27 → 2028-06-03 (+7d) |  |  |
| CON-LEG101-MS-1000 | Project Completion Date | 2028-05-27 → 2028-06-03 (+7d) | 2028-05-27 → 2028-06-03 (+7d) |  | -163d → -169d |
| 2 | **Contractual Milestone** |  | 2028-05-27 → 2028-06-03 (+7d) |  |  |
| 4 | **Engineering** | 2026-11-14 → 2026-11-21 (+7d) | 2026-11-14 → 2026-11-21 (+7d) |  |  |
| CON-LEG101-MS-1060 | Finish Submission and Approval for Shop Drawings, Method of Statement, Prequalification and Materials | 2026-11-14 → 2026-11-21 (+7d) | 2026-11-14 → 2026-11-21 (+7d) |  | -61d → -67d |
| 1 | **Procurement** | 2026-11-08 → 2026-11-15 (+7d) | 2026-11-08 → 2026-11-15 (+7d) |  |  |
| CON-LEG101-MS-1100 | Finish PO for Short Lead Item & Long Lead Item | 2026-11-08 → 2026-11-15 (+7d) | 2026-11-08 → 2026-11-15 (+7d) |  | -55.2d → -61.2d |
| 5 | **Construction** | 2027-01-25 → 2027-02-01 (+7d) | 2028-05-27 → 2028-06-03 (+7d) |  |  |
| CON-LEG101-MS-1130 | Completion of Deep infrastructure network | 2027-01-25 → 2027-02-01 (+7d) | 2027-01-25 → 2027-02-01 (+7d) |  | 38.65d → 41.65d |
| CON-LEG101-MS-1120 | Completion of Roads & Meduim Voltage | 2027-06-26 → 2027-07-03 (+7d) | 2027-06-26 → 2027-07-03 (+7d) |  | -110.65d → -104d |
| CON-LEG101-MS-1140 | Completion of Shallow infrastructure network | 2027-10-10 → 2027-10-17 (+7d) | 2027-10-10 → 2027-10-17 (+7d) |  | -40.4d → -46.4d |
| CON-LEG101-MS-1150 | Completion all Works | 2028-05-27 → 2028-06-03 (+7d) | 2028-05-27 → 2028-06-03 (+7d) |  | -163d → -169d |
| 6 | **Monitoring and Control Milestone** | 2027-06-27 → 2027-07-04 (+7d) | 2028-04-25 → 2028-05-02 (+7d) |  |  |
| CON-LEG101-MS-1050 | Completion of Outside Boundary Area's Scope (Tie-in Lines) | 2027-06-27 → 2027-07-04 (+7d) | 2027-06-27 → 2027-07-04 (+7d) |  | 17.18d → 11.18d |
| CON-LEG101-MS-1020 | Completion of Bridge | 2027-08-31 → 2027-09-04 (+4d) | 2027-08-31 → 2027-09-04 (+4d) |  | -69.5d → -43d |
| CON-LEG101-MS-1040 | Completion of Fence and Gate | 2027-12-07 → 2027-12-11 (+4d) | 2027-12-07 → 2027-12-11 (+4d) |  | -38.5d → -41.5d |
| CON-LEG101-MS-1010 | Completion of Roads Finishing | 2027-12-15 → 2027-12-22 (+7d) | 2027-12-15 → 2027-12-22 (+7d) |  | -97.4d → -103.4d |
| CON-LEG101-MS-1030 | Completion of Roundabout & Landscape works | 2028-04-25 → 2028-05-02 (+7d) | 2028-04-25 → 2028-05-02 (+7d) |  | -163d → -169d |
| 3 | **Engineering** |  | 2026-11-14 → 2026-11-21 (+7d) |  |  |
| 2 | **Shop Drawings** |  | 2026-11-14 → 2026-11-21 (+7d) |  |  |
| 1 | **Shop Drawings Submittal** |  | 2026-11-07 → 2026-11-14 (+7d) |  |  |
| 2 | **Shop Drawings Submittal for Electrical Network** |  | 2026-11-07 → 2026-11-14 (+7d) |  |  |
| CON-LEG101-EN-1390 | Shop DWG Submittal for Medium Voltage Network | 2026-10-28 → 2026-11-04 (+7d) | 2026-11-07 → 2026-11-14 (+7d) |  | -61d → -67d |
| 2 | **Shop Drawings Approval** |  | 2026-11-14 → 2026-11-21 (+7d) |  |  |
| 2 | **Shop Drawings Approval for Electrical Network** |  | 2026-11-14 → 2026-11-21 (+7d) |  |  |
| CON-LEG101-EN-1660 | Shop DWG Approval for Medium Voltage Network | 2026-11-08 → 2026-11-15 (+7d) | 2026-11-14 → 2026-11-21 (+7d) |  | -61d → -67d |
| 4 | **Pre-qualification and Material** |  | 2026-11-02 → 2026-11-09 (+7d) |  |  |
| 4 | **Electrical Network** |  | 2026-11-02 → 2026-11-09 (+7d) |  |  |
| 13 | **Ring Main Unit** |  | 2026-11-02 → 2026-11-09 (+7d) |  |  |
| CON-LEG101-SB-1710 | Pre-qualification and Material Approval for Ring Main Unit |  | 2026-11-02 → 2026-11-09 (+7d) |  | -55.2d → -61.2d |
| 14 | **Street Lighting Sub-station** |  | 2026-11-02 → 2026-11-09 (+7d) |  |  |
| CON-LEG101-SB-1750 | Pre-qualification and Material Approval for Street Lighting Sub-station |  | 2026-11-02 → 2026-11-09 (+7d) |  | -50.2d → -56.2d |
| 4 | **Procurement** |  | 2027-08-25 → 2027-08-28 (+3d) |  |  |
| 2 | **Short Lead Item** |  | 2027-08-25 → 2027-08-28 (+3d) |  |  |
| 1 | **Road Works - Civil** |  | 2027-08-25 → 2027-08-28 (+3d) |  |  |
| 9 | **Pavement Markings** |  | 2027-08-25 → 2027-08-28 (+3d) |  |  |
| CON-LEG101-PR-1600 | Material Delivery for Pavement Markings | 2027-08-03 → 2027-08-05 (+2d) | 2027-08-21 → 2027-08-23 (+2d) |  | -73.65d → -75.65d |
| CON-LEG101-PR-2070 | Staging Time for Pavement Markings | 2027-08-21 → 2027-08-23 (+2d) | 2027-08-25 → 2027-08-28 (+3d) |  | -73.65d → -75.65d |
| CON-LEG101-PR-1530 | Material Delivery for Wearing Course |  |  | 73% → 80% | -73.65d → -75.65d |
| 1 | **Long Lead Item** |  | 2027-06-19 → 2027-06-26 (+7d) |  |  |
| 10 | **Fence & Gates** |  | 2027-01-30 → 2027-02-06 (+7d) |  |  |
| 2 | **Gates** |  | 2027-01-30 → 2027-02-06 (+7d) |  |  |
| CON-LEG101-PR-2040 | Material Fabrication for Gates |  | 2026-12-31 → 2027-01-07 (+7d) |  | -18.95d → -19d |
| CON-LEG101-PR-2050 | Material Delivery for Gates | 2027-01-02 → 2027-01-09 (+7d) | 2027-01-18 → 2027-01-25 (+7d) |  | -18.95d → -19d |
| CON-LEG101-PR-2090 | Staging Time for Gates | 2027-01-19 → 2027-01-26 (+7d) | 2027-01-30 → 2027-02-06 (+7d) |  | -18.95d → -19d |
| 1 | **Electrical Network** |  | 2027-06-19 → 2027-06-26 (+7d) |  |  |
| 12 | **Cable Termination & Joints** |  | 2027-03-30 → 2027-04-06 (+7d) |  |  |
| CON-LEG101-PR-1240 | PO for Cable Termination & Joints |  | 2026-11-02 → 2026-11-09 (+7d) |  | -131d → -137d |
| CON-LEG101-PR-1270 | Material Fabrication for Cable Termination & Joints | 2026-11-03 → 2026-11-10 (+7d) | 2027-02-20 → 2027-02-28 (+8d) |  | -131d → -137d |
| CON-LEG101-PR-1300 | Material Delivery for Cable Termination & Joints | 2027-02-21 → 2027-03-01 (+8d) | 2027-03-10 → 2027-03-17 (+7d) |  | -131d → -137d |
| CON-LEG101-PR-1450 | Stagging Time for Cable Termination & Joints | 2027-03-20 → 2027-03-27 (+7d) | 2027-03-30 → 2027-04-06 (+7d) |  | -138d → -144d |
| 1 | **Medium Voltage Cable** |  | 2027-03-18 → 2027-03-25 (+7d) |  |  |
| CON-LEG101-PR-1000 | PO for Medium Voltage Cable |  | 2026-11-02 → 2026-11-09 (+7d) |  | -146d → -152d |
| CON-LEG101-PR-1080 | Material Fabrication for Medium Voltage Cable | 2026-11-23 → 2026-11-30 (+7d) | 2027-01-31 → 2027-02-07 (+7d) |  | -163d → -169d |
| CON-LEG101-PR-1160 | Material Delivery for Medium Voltage Cable | 2027-02-07 → 2027-02-18 (+11d) | 2027-03-01 → 2027-03-08 (+7d) |  | -163d → -169d |
| CON-LEG101-PR-1880 | Staging Time for Medium Voltage Cable | 2027-03-02 → 2027-03-09 (+7d) | 2027-03-18 → 2027-03-25 (+7d) |  | -163d → -169d |
| 4 | **Street Lighting Sub-station** |  | 2027-05-20 → 2027-05-27 (+7d) |  |  |
| CON-LEG101-PR-1090 | Material Fabrication for Street Lighting Sub-station | 2027-02-01 → 2027-02-08 (+7d) | 2027-04-17 → 2027-04-24 (+7d) |  | -104.95d → -105d |
| CON-LEG101-PR-1170 | Material Delivery for Street Lighting Sub-station | 2027-04-18 → 2027-04-25 (+7d) | 2027-05-04 → 2027-05-11 (+7d) |  | -104.95d → -105d |
| CON-LEG101-PR-1890 | Staging Time for Street Lighting Sub-station | 2027-05-05 → 2027-05-12 (+7d) | 2027-05-20 → 2027-05-27 (+7d) |  | -104.95d → -105d |
| 2 | **Ring Main Unit** | 2026-11-02 → 2026-11-09 (+7d) | 2027-06-19 → 2027-06-26 (+7d) |  |  |
| CON-LEG101-PR-2480 | PO for Ring Main Unit | 2026-11-02 → 2026-11-09 (+7d) | 2026-11-08 → 2026-11-15 (+7d) |  | -55.2d → -61.2d |
| CON-LEG101-PR-2490 | Material Fabrication for Ring Main Unit | 2027-01-20 → 2027-01-27 (+7d) | 2027-04-17 → 2027-04-24 (+7d) |  | -79.95d → -80d |
| CON-LEG101-PR-2500 | Material Delivery for Ring Main Unit | 2027-05-22 → 2027-05-29 (+7d) | 2027-06-07 → 2027-06-14 (+7d) |  | -104.95d → -105d |
| CON-LEG101-PR-2510 | Staging Time for Ring Main Unit | 2027-06-08 → 2027-06-15 (+7d) | 2027-06-19 → 2027-06-26 (+7d) |  | -104.95d → -105d |
| 6 | **Landscape Works** |  | 2027-06-07 → 2027-06-14 (+7d) |  |  |
| 8 | **Shrubs And Ground Cover** |  | 2027-06-07 → 2027-06-14 (+7d) |  |  |
| CON-LEG101-PR-3000 | Material Delivery for agricultural soil | 2027-02-01 → 2027-02-08 (+7d) | 2027-05-26 → 2027-06-02 (+7d) |  | 93d → 87d |
| CON-LEG101-PR-3060 | Staging Time for agricultural soil | 2027-05-27 → 2027-06-03 (+7d) | 2027-06-07 → 2027-06-14 (+7d) |  | 93d → 87d |

| ID | Task | Start | Finish | Total float |
| --- | --- | --- | --- | --- |
| 4 | **Bridge Works** |  | 2027-03-30 → 2027-04-06 (+7d) |  |
| 1 | **Guard Rail** |  | 2027-03-01 → 2027-03-08 (+7d) |  |
| CON-LEG101-PR-2280 | Material Delivery for Guard Rail |  | 2026-11-01 → 2026-11-08 (+7d) | 116.25d → 139.75d |
| CON-LEG101-PR-2290 | Staging Time for Guard Rail | 2027-02-01 → 2027-02-08 (+7d) | 2027-03-01 → 2027-03-08 (+7d) | 38d → 61.5d |
| 2 | **GRP Panel** |  | 2027-03-30 → 2027-04-06 (+7d) |  |
| CON-LEG101-PR-2310 | Material Fabrication for GRP Panel |  | 2026-11-10 → 2026-11-17 (+7d) | 128d → 151.5d |
| CON-LEG101-PR-2320 | Material Delivery for GRP Panel | 2027-03-02 → 2027-03-09 (+7d) | 2027-03-18 → 2027-03-25 (+7d) | 38d → 61.5d |
| CON-LEG101-PR-2330 | Staging Time for GRP Panel | 2027-03-20 → 2027-03-27 (+7d) | 2027-03-30 → 2027-04-06 (+7d) | 38d → 61.5d |
| 1 | **Construction** |  | 2028-04-25 → 2028-05-02 (+7d) |  |
| 1 | **Roads & Meduim Voltage** |  | 2027-06-26 → 2027-07-03 (+7d) |  |
| 1 | **Local – 01** |  | 2027-06-09 → 2027-06-16 (+7d) |  |
| 1 | **LOCAL - 01 Segment-01 (From 0+000 to 1+066)** |  | 2027-04-21 → 2027-04-28 (+7d) |  |
| 8 | **Electrical Works** |  | 2027-04-21 → 2027-04-28 (+7d) |  |
| CON-LEG101-LR-15000 | Approval of Subcontractor / Supplier / Consultant for Medium Voltage from SEC | 2026-10-28 → 2026-11-04 (+7d) | 2026-11-08 → 2026-11-15 (+7d) | -163d → -169d |
| CON-LEG101-LR-15010 | Approval Materials of Medium Voltage from SEC | 2026-11-09 → 2026-11-16 (+7d) | 2026-11-19 → 2026-11-26 (+7d) | -163d → -169d |
| CON-LEG101-LR-15030 | PO for Medium Voltage | 2026-11-21 → 2026-11-28 (+7d) | 2026-11-22 → 2026-11-29 (+7d) | -163d → -169d |
| CON-LEG101-LR-15020 | Testing Materials of Medium Voltage from SEC | 2027-02-01 → 2027-02-08 (+7d) | 2027-02-06 → 2027-02-17 (+11d) | -163d → -169d |
| 2 | **Medium Voltage** |  | 2027-04-21 → 2027-04-28 (+7d) |  |
| CON-LEG101-LR-6880 | Excavation for Medium Voltage trench [Local – 01 Segment-01] | 2027-03-20 → 2027-03-27 (+7d) | 2027-03-27 → 2027-04-03 (+7d) | -163d → -169d |
| CON-LEG101-LR-7060 | Installation of Medium Voltage Cables [Local – 01 Segment-01] | 2027-03-28 → 2027-04-04 (+7d) | 2027-04-04 → 2027-04-11 (+7d) | -96.65d → -90d |
| CON-LEG101-LR-7150 | Installation of Straight joints cables [Local – 01 Segment-01] | 2027-04-05 → 2027-04-12 (+7d) | 2027-04-06 → 2027-04-13 (+7d) | -96.65d → -90d |
| CON-LEG101-LR-7240 | Installation of Cable Termination for 13.8 kv 3Cx 500 mm², Al /XLPE/LLDPE [Local – 01 Segment-01] | 2027-04-07 → 2027-04-14 (+7d) | 2027-04-10 → 2027-04-17 (+7d) | -96.65d → -90d |
| CON-LEG101-LR-7330 | Installation of Medium Voltage Switchgears [Local – 01 Segment-01] | 2027-04-11 → 2027-04-18 (+7d) | 2027-04-18 → 2027-04-25 (+7d) | -96.65d → -90d |
| CON-LEG101-LR-7680 | Installation of Cable Termination [Local – 01 Segment-01] | 2027-04-19 → 2027-04-26 (+7d) | 2027-04-21 → 2027-04-28 (+7d) | -96.65d → -90d |
| 2 | **LOCAL - 01 Segment-02 (From 1+066 to 2+133)** |  | 2027-05-09 → 2027-05-20 (+11d) |  |
| 8 | **Electrical Works** |  | 2027-05-09 → 2027-05-20 (+11d) |  |
| 2 | **Medium Voltage** |  | 2027-05-09 → 2027-05-20 (+11d) |  |
| CON-LEG101-LR-6890 | Excavation for Medium Voltage trench [Local – 01 Segment-02] | 2027-03-28 → 2027-04-04 (+7d) | 2027-04-04 → 2027-04-11 (+7d) | -163d → -169d |
| CON-LEG101-LR-7070 | Installation of Medium Voltage Cables [Local – 01 Segment-02] | 2027-04-05 → 2027-04-12 (+7d) | 2027-04-12 → 2027-04-19 (+7d) | -93.65d → -87d |
| CON-LEG101-LR-7160 | Installation of Straight joints cables [Local – 01 Segment-02] | 2027-04-13 → 2027-04-20 (+7d) | 2027-04-18 → 2027-04-25 (+7d) | -93.65d → -87d |
| CON-LEG101-LR-7250 | Installation of Cable Termination for 13.8 kv 3Cx 500 mm², Al /XLPE/LLDPE [Local – 01 Segment-02] | 2027-04-22 → 2027-04-29 (+7d) | 2027-04-25 → 2027-05-02 (+7d) | -96.65d → -90d |
| CON-LEG101-LR-7340 | Installation of Medium Voltage Switchgears [Local – 01 Segment-02] | 2027-04-26 → 2027-05-03 (+7d) | 2027-05-03 → 2027-05-10 (+7d) | -96.65d → -90d |
| CON-LEG101-LR-7690 | Installation of Cable Termination [Local – 01 Segment-02] | 2027-05-04 → 2027-05-11 (+7d) | 2027-05-09 → 2027-05-20 (+11d) | -96.65d → -90d |
| 3 | **LOCAL - 01 Segment-03 (From 2+133 to 3+200)** |  | 2027-06-09 → 2027-06-16 (+7d) |  |
| 8 | **Electrical Works** |  | 2027-06-09 → 2027-06-16 (+7d) |  |
| 2 | **Medium Voltage** |  | 2027-06-09 → 2027-06-16 (+7d) |  |
| CON-LEG101-LR-6900 | Excavation for Medium Voltage trench [Local – 01 Segment-03] | 2027-05-10 → 2027-05-22 (+12d) | 2027-05-13 → 2027-05-25 (+12d) | -96.65d → -90d |
| CON-LEG101-LR-7080 | Installation of Medium Voltage Cables [Local – 01 Segment-03] | 2027-05-19 → 2027-05-26 (+7d) | 2027-05-26 → 2027-06-02 (+7d) | -96.65d → -90d |
| CON-LEG101-LR-7170 | Installation of Straight joints cables [Local – 01 Segment-03] | 2027-05-27 → 2027-06-03 (+7d) | 2027-05-29 → 2027-06-05 (+7d) | -96.65d → -90d |
| CON-LEG101-LR-7260 | Installation of Cable Termination for 13.8 kv 3Cx 500 mm², Al /XLPE/LLDPE [Local – 01 Segment-03] | 2027-05-30 → 2027-06-06 (+7d) | 2027-06-01 → 2027-06-08 (+7d) | -96.65d → -90d |
| CON-LEG101-LR-7350 | Installation of Medium Voltage Switchgears [Local – 01 Segment-03] | 2027-06-02 → 2027-06-09 (+7d) | 2027-06-06 → 2027-06-13 (+7d) | -96.65d → -90d |
| CON-LEG101-LR-7700 | Installation of Cable Termination [Local – 01 Segment-03] | 2027-06-07 → 2027-06-14 (+7d) | 2027-06-09 → 2027-06-16 (+7d) | -96.65d → -90d |
| 4 | **Local – 02** |  | 2027-05-29 → 2027-06-05 (+7d) |  |
| 8 | **Electrical Works** |  | 2027-05-29 → 2027-06-05 (+7d) |  |
| 2 | **Medium Voltage** |  | 2027-05-29 → 2027-06-05 (+7d) |  |
| CON-LEG101-LR-6910 | Excavation for Medium Voltage trench [Local – 02 ] | 2027-04-05 → 2027-04-12 (+7d) | 2027-04-13 → 2027-04-20 (+7d) | -163d → -169d |
| CON-LEG101-LR-7090 | Installation of Medium Voltage Cables [Local – 02 ] | 2027-04-14 → 2027-04-21 (+7d) | 2027-04-28 → 2027-05-05 (+7d) | -163d → -169d |
| CON-LEG101-LR-7180 | Installation of Straight joints cables [Local – 02 ] | 2027-04-29 → 2027-05-06 (+7d) | 2027-05-05 → 2027-05-12 (+7d) | -163d → -169d |
| CON-LEG101-LR-7270 | Installation of Cable Termination for 13.8 kv 3Cx 500 mm², Al /XLPE/LLDPE [Local – 02 ] | 2027-05-06 → 2027-05-13 (+7d) | 2027-05-19 → 2027-05-26 (+7d) | -163d → -169d |
| CON-LEG101-LR-7360 | Installation of Medium Voltage Switchgears [Local – 02 ] | 2027-05-20 → 2027-05-27 (+7d) | 2027-05-25 → 2027-06-01 (+7d) | -163d → -169d |
| CON-LEG101-LR-7710 | Installation of Cable Termination [Local – 02 ] | 2027-05-26 → 2027-06-02 (+7d) | 2027-05-29 → 2027-06-05 (+7d) | -163d → -169d |
| 2 | **Local – 03** |  | 2027-06-21 → 2027-06-28 (+7d) |  |
| 8 | **Electrical Works** |  | 2027-06-21 → 2027-06-28 (+7d) |  |
| 2 | **Medium Voltage** |  | 2027-06-21 → 2027-06-28 (+7d) |  |
| CON-LEG101-LR-6920 | Excavation for Medium Voltage trench [Local – 03 ] | 2027-05-30 → 2027-06-06 (+7d) | 2027-06-01 → 2027-06-08 (+7d) | -163d → -169d |
| CON-LEG101-LR-7100 | Installation of Medium Voltage Cables [Local – 03 ] | 2027-06-02 → 2027-06-09 (+7d) | 2027-06-07 → 2027-06-14 (+7d) | -106.65d → -100d |
| CON-LEG101-LR-7190 | Installation of Straight joints cables [Local – 03 ] | 2027-06-08 → 2027-06-15 (+7d) | 2027-06-09 → 2027-06-16 (+7d) | -106.65d → -100d |
| CON-LEG101-LR-7280 | Installation of Cable Termination for 13.8 kv 3Cx 500 mm², Al /XLPE/LLDPE [Local – 03 ] | 2027-06-10 → 2027-06-17 (+7d) | 2027-06-13 → 2027-06-20 (+7d) | -106.65d → -100d |
| CON-LEG101-LR-7370 | Installation of Medium Voltage Switchgears [Local – 03 ] | 2027-06-14 → 2027-06-21 (+7d) | 2027-06-17 → 2027-06-24 (+7d) | -106.65d → -100d |
| CON-LEG101-LR-7720 | Installation of Cable Termination [Local – 03 ] | 2027-06-19 → 2027-06-26 (+7d) | 2027-06-21 → 2027-06-28 (+7d) | -106.65d → -100d |
| 3 | **Local – 04** |  | 2027-06-26 → 2027-07-03 (+7d) |  |
| 7 | **Road Works** |  | 2027-01-24 → 2027-01-31 (+7d) |  |
| 1 | **Earthworks and Site Grading** |  | 2026-12-26 → 2027-01-02 (+7d) |  |
| CON-LEG101-LR-1800 | Excavation for Roadway [Local – 04 ] | 2026-11-15 → 2026-11-22 (+7d) | 2026-12-01 → 2026-12-08 (+7d) | -60.24d → -66.24d |
| CON-LEG101-LR-4420 | Embankments to the roads [Local – 04 ] | 2026-12-02 → 2026-12-09 (+7d) | 2026-12-26 → 2027-01-02 (+7d) | 12.35d → 19d |
| 2 | **Asphalt Work** | 2026-12-27 → 2027-01-03 (+7d) | 2027-01-24 → 2027-01-31 (+7d) |  |
| CON-LEG101-LR-5630 | Subgrade [Local – 04 ] | 2026-12-27 → 2027-01-03 (+7d) | 2027-01-09 → 2027-01-16 (+7d) | 12.35d → 19d |
| CON-LEG101-LR-5730 | Aggregate base course [Local – 04 ] | 2027-01-11 → 2027-01-18 (+7d) | 2027-01-19 → 2027-01-26 (+7d) | 11.35d → 18d |
| CON-LEG101-LR-5830 | Prime Coat (MC1) [Local – 04 ] | 2027-01-20 → 2027-01-27 (+7d) | 2027-01-21 → 2027-01-28 (+7d) | 11.35d → 18d |
| CON-LEG101-LR-5930 | Bituminous Base Course [Local – 04 ] | 2027-01-23 → 2027-01-30 (+7d) | 2027-01-24 → 2027-01-31 (+7d) | 11.35d → 18d |

| ID | Task | Start | Finish | Total float |
| --- | --- | --- | --- | --- |
| 1 | **Electric Works** | 2027-05-30 → 2027-06-06 (+7d) | 2027-06-26 → 2027-07-03 (+7d) |  |
| 2 | **Medium Voltage** | 2027-05-30 → 2027-06-06 (+7d) | 2027-06-26 → 2027-07-03 (+7d) |  |
| CON-LEG101-LR-6930 | Excavation for Medium Voltage trench [Local – 04 ] | 2027-05-30 → 2027-06-06 (+7d) | 2027-06-02 → 2027-06-09 (+7d) | -163d → -169d |
| CON-LEG101-LR-7020 | Installation of Medium Voltage Cables Duct Banks [Local – 04 ] | 2027-06-03 → 2027-06-10 (+7d) | 2027-06-06 → 2027-06-13 (+7d) | -110.65d → -104d |
| CON-LEG101-LR-7110 | Installation of Medium Voltage Cables [Local – 04 ] | 2027-06-07 → 2027-06-14 (+7d) | 2027-06-13 → 2027-06-20 (+7d) | -110.65d → -104d |
| CON-LEG101-LR-7200 | Installation of Straight joints cables [Local – 04 ] | 2027-06-14 → 2027-06-21 (+7d) | 2027-06-16 → 2027-06-23 (+7d) | -110.65d → -104d |
| CON-LEG101-LR-7290 | Installation of Cable Termination for 13.8 kv 3Cx 500 mm², Al /XLPE/LLDPE [Local – 04 ] | 2027-06-17 → 2027-06-24 (+7d) | 2027-06-20 → 2027-06-27 (+7d) | -110.65d → -104d |
| CON-LEG101-LR-7380 | Installation of Medium Voltage Switchgears [Local – 04 ] | 2027-06-21 → 2027-06-28 (+7d) | 2027-06-22 → 2027-06-29 (+7d) | -110.65d → -104d |
| CON-LEG101-LR-7730 | Installation of Cable Termination [Local – 04 ] | 2027-06-23 → 2027-06-30 (+7d) | 2027-06-26 → 2027-07-03 (+7d) | -110.65d → -104d |
| 5 | **Local – 05** |  | 2027-06-20 → 2027-06-27 (+7d) |  |
| 8 | **Electrical Works** |  | 2027-06-20 → 2027-06-27 (+7d) |  |
| 2 | **Medium Voltage** |  | 2027-06-20 → 2027-06-27 (+7d) |  |
| CON-LEG101-LR-6940 | Excavation for Medium Voltage trench [Local – 05 ] | 2027-06-03 → 2027-06-10 (+7d) | 2027-06-07 → 2027-06-14 (+7d) | -105.65d → -99d |
| CON-LEG101-LR-7120 | Installation of Medium Voltage Cables [Local – 05 ] | 2027-06-08 → 2027-06-15 (+7d) | 2027-06-12 → 2027-06-19 (+7d) | -105.65d → -99d |
| CON-LEG101-LR-7210 | Installation of Straight joints cables [Local – 05 ] | 2027-06-13 → 2027-06-20 (+7d) | 2027-06-14 → 2027-06-21 (+7d) | -105.65d → -99d |
| CON-LEG101-LR-7300 | Installation of Cable Termination for 13.8 kv 3Cx 500 mm², Al /XLPE/LLDPE [Local – 05 ] | 2027-06-15 → 2027-06-22 (+7d) | 2027-06-16 → 2027-06-23 (+7d) | -105.65d → -99d |
| CON-LEG101-LR-7390 | Installation of Medium Voltage Switchgears [Local – 05 ] | 2027-06-17 → 2027-06-24 (+7d) | 2027-06-19 → 2027-06-26 (+7d) | -105.65d → -99d |
| CON-LEG101-LR-7740 | Installation of Cable Termination [Local – 05 ] | 2027-06-17 → 2027-06-24 (+7d) | 2027-06-20 → 2027-06-27 (+7d) | -105.65d → -99d |
| 6 | **Local – 06** |  | 2027-06-19 → 2027-06-26 (+7d) |  |
| 8 | **Electrical Works** |  | 2027-06-19 → 2027-06-26 (+7d) |  |
| 2 | **Medium Voltage** |  | 2027-06-19 → 2027-06-26 (+7d) |  |
| CON-LEG101-LR-6950 | Excavation for Medium Voltage trench [Local – 06 ] | 2027-06-05 → 2027-06-12 (+7d) | 2027-06-07 → 2027-06-14 (+7d) | -104.65d → -98d |
| CON-LEG101-LR-7130 | Installation of Medium Voltage Cables [Local – 06 ] | 2027-06-08 → 2027-06-15 (+7d) | 2027-06-10 → 2027-06-17 (+7d) | -104.65d → -98d |
| CON-LEG101-LR-7220 | Installation of Straight joints cables [Local – 06 ] | 2027-06-12 → 2027-06-19 (+7d) | 2027-06-13 → 2027-06-20 (+7d) | -104.65d → -98d |
| CON-LEG101-LR-7310 | Installation of Cable Termination for 13.8 kv 3Cx 500 mm², Al /XLPE/LLDPE [Local – 06 ] | 2027-06-14 → 2027-06-21 (+7d) | 2027-06-15 → 2027-06-22 (+7d) | -104.65d → -98d |
| CON-LEG101-LR-7400 | Installation of Medium Voltage Switchgears [Local – 06 ] | 2027-06-16 → 2027-06-23 (+7d) | 2027-06-17 → 2027-06-24 (+7d) | -104.65d → -98d |
| CON-LEG101-LR-7750 | Installation of Cable Termination [Local – 06 ] | 2027-06-16 → 2027-06-23 (+7d) | 2027-06-19 → 2027-06-26 (+7d) | -104.65d → -98d |
| 7 | **Local – 07** |  | 2027-06-17 → 2027-06-24 (+7d) |  |
| 7 | **Road Works** |  | 2026-12-02 → 2026-12-09 (+7d) |  |
| 1 | **Earthworks and Site Grading** |  | 2026-12-02 → 2026-12-09 (+7d) |  |
| CON-LEG101-LR-5070 | Embankments to the parcels for roads [Local – 07 ] |  | 2026-12-02 → 2026-12-09 (+7d) | 57.07d → 63.72d |
| 8 | **Electrical Works** |  | 2027-06-17 → 2027-06-24 (+7d) |  |
| 2 | **Medium Voltage** |  | 2027-06-17 → 2027-06-24 (+7d) |  |
| CON-LEG101-LR-6960 | Excavation for Medium Voltage trench [Local – 07 ] | 2027-06-05 → 2027-06-12 (+7d) | 2027-06-07 → 2027-06-14 (+7d) | -103.65d → -97d |
| CON-LEG101-LR-7140 | Installation of Medium Voltage Cables [Local – 07 ] | 2027-06-08 → 2027-06-15 (+7d) | 2027-06-10 → 2027-06-17 (+7d) | -103.65d → -97d |
| CON-LEG101-LR-7230 | Installation of Straight joints cables [Local – 07 ] | 2027-06-12 → 2027-06-19 (+7d) | 2027-06-13 → 2027-06-20 (+7d) | -103.65d → -97d |
| CON-LEG101-LR-7320 | Installation of Cable Termination for 13.8 kv 3Cx 500 mm², Al /XLPE/LLDPE [Local – 07 ] | 2027-06-14 → 2027-06-21 (+7d) | 2027-06-15 → 2027-06-22 (+7d) | -103.65d → -97d |
| CON-LEG101-LR-7410 | Installation of Medium Voltage Switchgears [Local – 07 ] | 2027-06-16 → 2027-06-23 (+7d) | 2027-06-17 → 2027-06-24 (+7d) | -103.65d → -97d |
| CON-LEG101-LR-7760 | Installation of Cable Termination [Local – 07 ] | 2027-06-16 → 2027-06-23 (+7d) | 2027-06-17 → 2027-06-24 (+7d) | -103.65d → -97d |
| 6 | **Deep Infrastructure network** |  | 2027-01-25 → 2027-02-01 (+7d) |  |
| 1 | **Local – 01** |  | 2026-11-18 → 2026-11-25 (+7d) |  |
| 1 | **LOCAL - 01 Segment-01 (From 0+000 to 1+066)** |  | 2026-11-17 → 2026-11-24 (+7d) |  |
| 1 | **Stormwater Utilities** |  | 2026-11-17 → 2026-11-24 (+7d) |  |
| 1 | **Manhole** |  | 2026-11-16 → 2026-11-23 (+7d) |  |
| CON-LEG101-LR-10920 | Finishing and Testing of Inlet Manholes [Local – 01 Segment-01] |  | 2026-11-16 → 2026-11-23 (+7d) | 70.85d → 77.5d |
| 3 | **Concrete Chambers/Outfalls** |  | 2026-11-17 → 2026-11-24 (+7d) |  |
| CON-LEG101-LR-10880 | FInishing and Testing of Concrete chambers [Local – 01 Segment-01] |  | 2026-11-17 → 2026-11-24 (+7d) | 80.65d → 85.3d |
| 4 | **Sanitary Sewerage** |  | 2026-11-15 → 2026-11-22 (+7d) |  |
| 1 | **Manhole** |  | 2026-11-15 → 2026-11-22 (+7d) |  |
| CON-LEG101-LR-3500 | Installation of Fiberglass Manholes [Local – 01 Segment-01] |  | 2026-11-15 → 2026-11-22 (+7d) | 20.35d → 27d |
| 2 | **LOCAL - 01 Segment-02 (From 1+066 to 2+133)** |  | 2026-11-17 → 2026-11-24 (+7d) |  |
| 1 | **Stormwater Utilities** |  | 2026-11-17 → 2026-11-24 (+7d) |  |
| 3 | **Concrete Chambers/Outfalls** |  | 2026-11-17 → 2026-11-24 (+7d) |  |
| CON-LEG101-LR-11030 | FInishing and Testing of Concrete chambers [Local – 01 Segment-02] |  | 2026-11-17 → 2026-11-24 (+7d) | 80.65d → 85.3d |
| 4 | **Sanitary Sewerage** |  | 2026-11-15 → 2026-11-22 (+7d) |  |
| 1 | **Manhole** |  | 2026-11-15 → 2026-11-22 (+7d) |  |
| CON-LEG101-LR-3510 | Installation of Fiberglass Manholes [Local – 01 Segment-02] |  | 2026-11-15 → 2026-11-22 (+7d) | 21.93d → 28.58d |
| 3 | **LOCAL - 01 Segment-03 (From 2+133 to 3+200)** |  | 2026-11-18 → 2026-11-25 (+7d) |  |
| 1 | **Stormwater Utilities** |  | 2026-11-18 → 2026-11-25 (+7d) |  |
| 1 | **Manhole** |  | 2026-11-15 → 2026-11-22 (+7d) |  |
| CON-LEG101-LR-11070 | Finishing and Testing of Inlet Manholes [Local – 01 Segment-03] |  | 2026-11-15 → 2026-11-22 (+7d) | 49.05d → 55.7d |
| 3 | **Concrete Chambers/Outfalls** |  | 2026-11-18 → 2026-11-25 (+7d) |  |
| CON-LEG101-LR-11130 | FInishing and Testing of Concrete chambers [Local – 01 Segment-03] |  | 2026-11-18 → 2026-11-25 (+7d) | 80.65d → 85.3d |
| 4 | **Sanitary Sewerage** |  | 2026-11-15 → 2026-11-22 (+7d) |  |
| 1 | **Manhole** |  | 2026-11-15 → 2026-11-22 (+7d) |  |
| CON-LEG101-LR-3520 | Installation of Fiberglass Manholes [Local – 01 Segment-03] |  | 2026-11-15 → 2026-11-22 (+7d) | 48.35d → 55d |
| 2 | **Local – 02** |  | 2026-11-18 → 2026-11-25 (+7d) |  |
| 1 | **Stormwater Utilities** |  | 2026-11-18 → 2026-11-25 (+7d) |  |
| 1 | **Manhole** |  | 2026-11-15 → 2026-11-22 (+7d) |  |
| CON-LEG101-LR-11180 | Finishing and Testing of Inlet Manholes [Local – 02 ] |  | 2026-11-15 → 2026-11-22 (+7d) | 71.55d → 78.2d |

| ID | Task | Start | Finish | Complete | Total float |
| --- | --- | --- | --- | --- | --- |
| 3 | **Concrete Chambers/Outfalls** |  | 2026-11-18 → 2026-11-25 (+7d) |  |  |
| CON-LEG101-LR-11230 | FInishing and Testing of Concrete chambers [Local – 02 ] |  | 2026-11-18 → 2026-11-25 (+7d) |  | 80.65d → 85.3d |
| 4 | **Sanitary Sewerage** |  | 2026-11-15 → 2026-11-22 (+7d) |  |  |
| 1 | **Manhole** |  | 2026-11-15 → 2026-11-22 (+7d) |  |  |
| CON-LEG101-LR-3530 | Installation of Fiberglass Manholes [Local – 02 ] |  | 2026-11-15 → 2026-11-22 (+7d) |  | -46.24d → -52.24d |
| 3 | **Local – 03** |  | 2026-11-22 → 2026-11-28 (+6d) |  |  |
| 1 | **Stormwater Utilities** |  | 2026-11-22 → 2026-11-28 (+6d) |  |  |
| 1 | **Manhole** |  | 2026-11-22 → 2026-11-25 (+3d) |  |  |
| CON-LEG101-LR-11280 | Finishing and Testing of Inlet Manholes [Local – 03 ] |  | 2026-11-22 → 2026-11-25 (+3d) | 70% → 85% | 77.9d → 83.9d |
| 3 | **Concrete Chambers/Outfalls** |  | 2026-11-22 → 2026-11-28 (+6d) |  |  |
| CON-LEG101-LR-11340 | FInishing and Testing of Concrete chambers [Local – 03 ] |  | 2026-11-22 → 2026-11-28 (+6d) | 70% → 85% | 80.65d → 85.3d |
| 4 | **Local – 04** |  | 2027-01-24 → 2027-01-31 (+7d) |  |  |
| 1 | **Stormwater Utilities** |  | 2027-01-24 → 2027-01-31 (+7d) |  |  |
| 2 | **Pipe Work** |  | 2026-12-22 → 2026-12-29 (+7d) |  |  |
| CON-LEG101-LR-3930 | Testing for Stormwater Utilities Network [Local – 04 ] | 2026-12-02 → 2026-12-09 (+7d) | 2026-12-15 → 2026-12-22 (+7d) |  | -60.24d → -66.24d |
| CON-LEG101-LR-4140 | Installation of Micron Marker Magnetic Tape [Local – 04 ] | 2026-12-16 → 2026-12-23 (+7d) | 2026-12-17 → 2026-12-24 (+7d) |  | -60.24d → -66.24d |
| CON-LEG101-LR-4250 | Backfilling to Subgrade Elevation [Local – 04 ] | 2026-12-19 → 2026-12-26 (+7d) | 2026-12-22 → 2026-12-29 (+7d) |  | -60.24d → -66.24d |
| 1 | **Manhole** |  | 2026-12-30 → 2027-01-06 (+7d) |  |  |
| CON-LEG101-LR-4370 | Installation of Inlet Manholes [Local – 04 ] |  | 2026-12-06 → 2026-12-13 (+7d) |  | -52.24d → -58.24d |
| CON-LEG101-LR-11380 | Backfilling of Inlet Manholes [Local – 04 ] | 2026-12-07 → 2026-12-14 (+7d) | 2026-12-13 → 2026-12-20 (+7d) |  | -52.24d → -58.24d |
| CON-LEG101-LR-11390 | Finishing and Testing of Inlet Manholes [Local – 04 ] | 2026-12-14 → 2026-12-21 (+7d) | 2026-12-30 → 2027-01-06 (+7d) |  | 59.7d → 62.7d |
| 3 | **Concrete Chambers/Outfalls** | 2026-12-07 → 2026-12-14 (+7d) | 2027-01-24 → 2027-01-31 (+7d) |  |  |
| CON-LEG101-LR-11400 | Excavation of Concrete chambers [Local – 04 ] | 2026-12-07 → 2026-12-14 (+7d) | 2026-12-13 → 2026-12-20 (+7d) |  | 11.35d → 18d |
| CON-LEG101-LR-11410 | PC of Concrete chambers [Local – 04 ] | 2026-12-14 → 2026-12-21 (+7d) | 2026-12-15 → 2026-12-22 (+7d) |  | 11.35d → 18d |
| CON-LEG101-LR-4470 | Installation of Concrete chambers [Local – 04 ] | 2026-12-16 → 2026-12-23 (+7d) | 2026-12-27 → 2027-01-03 (+7d) |  | 11.35d → 18d |
| CON-LEG101-LR-11420 | Installation UPVC Pipes to Concrete chambers [Local – 04 ] | 2026-12-28 → 2027-01-04 (+7d) | 2027-01-03 → 2027-01-10 (+7d) |  | 11.35d → 18d |
| CON-LEG101-LR-11430 | Backfilling to Concrete chambers [Local – 04 ] | 2027-01-04 → 2027-01-11 (+7d) | 2027-01-10 → 2027-01-17 (+7d) |  | 11.35d → 18d |
| CON-LEG101-LR-11440 | FInishing and Testing of Concrete chambers [Local – 04 ] | 2027-01-11 → 2027-01-18 (+7d) | 2027-01-24 → 2027-01-31 (+7d) |  | 38.65d → 41.65d |
| 4 | **Sanitary Sewerage** |  | 2026-12-14 → 2026-12-21 (+7d) |  |  |
| 2 | **Pipe Work** |  | 2026-12-14 → 2026-12-21 (+7d) |  |  |
| CON-LEG101-LR-3180 | Concrete encasement, pipe dia 200 and 350 mm [Local – 04 ] | 2026-12-02 → 2026-12-09 (+7d) | 2026-12-05 → 2026-12-12 (+7d) |  | -53.24d → -59.24d |
| CON-LEG101-LR-3360 | Installation of Micron Marker Magnetic Tape [Local – 04 ] | 2026-12-06 → 2026-12-13 (+7d) | 2026-12-07 → 2026-12-14 (+7d) |  | -53.24d → -59.24d |
| CON-LEG101-LR-3450 | Backfilling to Subgrade Elevation [Local – 04 ] | 2026-12-08 → 2026-12-15 (+7d) | 2026-12-14 → 2026-12-21 (+7d) |  | -53.24d → -59.24d |
| 1 | **Manhole** |  | 2026-12-05 → 2026-12-12 (+7d) |  |  |
| CON-LEG101-LR-3540 | Installation of Fiberglass Manholes [Local – 04 ] |  | 2026-12-05 → 2026-12-12 (+7d) |  | -45.24d → -51.24d |
| 5 | **Local – 05** |  | 2026-12-02 → 2026-12-09 (+7d) |  |  |
| 4 | **Sanitary Sewerage** |  | 2026-12-02 → 2026-12-09 (+7d) |  |  |
| 1 | **Manhole** |  | 2026-12-02 → 2026-12-09 (+7d) |  |  |
| CON-LEG101-LR-3550 | Installation of Fiberglass Manholes [Local – 05 ] |  | 2026-12-02 → 2026-12-09 (+7d) |  | 41.45d → 48.1d |
| 8 | **Local – 08** |  | 2027-01-25 → 2027-02-01 (+7d) |  |  |
| 1 | **Stormwater Utilities** |  | 2027-01-25 → 2027-02-01 (+7d) |  |  |
| 1 | **Manhole** |  | 2026-12-31 → 2027-01-07 (+7d) |  |  |
| CON-LEG101-LR-11750 | Finishing and Testing of Inlet Manholes [Local – 08 ] |  | 2026-12-31 → 2027-01-07 (+7d) |  | 59.7d → 62.7d |
| 3 | **Concrete Chambers/Outfalls** |  | 2027-01-25 → 2027-02-01 (+7d) |  |  |
| CON-LEG101-LR-11800 | FInishing and Testing of Concrete chambers [Local – 08 ] |  | 2027-01-25 → 2027-02-01 (+7d) |  | 38.65d → 41.65d |
| 7 | **Shallow infrastructure network** |  | 2027-10-10 → 2027-10-17 (+7d) |  |  |
| 1 | **Local – 01** |  | 2027-08-03 → 2027-08-05 (+2d) |  |  |
| 1 | **LOCAL - 01 Segment-01 (From 0+000 to 1+066)** |  | 2027-08-01 → 2027-07-31 (-1d) |  |  |
| 1 | **Electrical Works** |  | 2027-07-07 → 2027-07-06 (-1d) |  |  |
| 3 | **Low Voltage** |  | 2027-07-07 → 2027-07-06 (-1d) |  |  |
| CON-LEG101-LR-7780 | Excavation works for Low Voltage Cables [Local – 01 Segment-01] |  | 2027-06-30 → 2026-10-27 A (-246d) | 80% → 100% | -110.65d → none |
| CON-LEG101-LR-7880 | Installation of Low Voltage Cables [Local – 01 Segment-01] |  | 2027-07-05 → 2026-10-29 A (-249d) | 80% → 100% | -85.6d → none |
| CON-LEG101-LR-8760 | Installation of Earthing System [Local – 01 Segment-01] |  | 2027-07-07 → 2027-07-06 (-1d) |  | 39.9d → 41.5d |
| 10 | **Telecommunications** |  | 2027-08-01 → 2027-07-27 (-5d) |  |  |
| CON-LEG101-LR-9330 | Installation of Reinforced concrete manhole [Local – 01 Segment-01] |  | 2027-08-01 → 2027-07-27 (-5d) |  | 18.75d → 22.7d |
| CON-LEG101-LR-9030 | Installation of Sand encased duct banks for secondary network [Local – 01 Segment-01] |  | 2027-07-12 → 2027-07-10 (-2d) | 55% → 60% | 18.75d → 22.7d |
| CON-LEG101-LR-9130 | Installation of Sand and soil encased duct banks, for combined network of primary and secondary [Local – 01 Segment-01 |  | 2027-07-21 → 2027-07-18 (-3d) | 55% → 60% | 18.75d → 22.7d |
| CON-LEG101-LR-9230 | Installation of Concrete encased duct banks for for combined network of primary and secondary [Local – 01 Segment-01] |  | 2027-07-29 → 2027-07-25 (-4d) | 55% → 60% | 18.75d → 22.7d |
| 11 | **CCTV feeding system and GSM** |  | 2027-07-14 → 2027-07-10 (-4d) |  |  |
| CON-LEG101-LR-8550 | Excavation works for Low Voltage Cables for CCTV feeding system and GSM [Local – 01 Segment-01] |  | 2027-06-30 → 2026-10-15 A (-258d) | 90% → 100% | -110.65d → none |
| CON-LEG101-LR-9430 | Installation of Fiber Optic Patch Panel 12 port [Local – 01 Segment-01] |  | 2027-07-04 → 2026-10-15 A (-262d) | 90% → 100% | 32d → none |
| CON-LEG101-LR-9450 | Installation of Modular Industrial Switches for main pole [Local – 01 Segment-01] |  | 2027-07-04 → 2026-10-15 A (-262d) | 90% → 100% | 32d → none |
| CON-LEG101-LR-9460 | Installation of 8POE ports Industrial Switches for remote poles [Local – 01 Segment-01] |  | 2027-07-05 → 2026-10-15 A (-263d) | 90% → 100% | 32d → none |
| CON-LEG101-LR-9520 | Installation of Core Switch [Local – 01 Segment-01] |  | 2027-07-05 → 2026-10-15 A (-263d) | 90% → 100% | 32d → none |
| CON-LEG101-LR-9540 | Installation of Access Switch 48 port [Local – 01 Segment-01] |  | 2027-07-06 → 2026-10-15 A (-264d) | 90% → 100% | 32d → none |
| CON-LEG101-LR-9560 | Installation of Server [Local – 01 Segment-01] |  | 2027-07-06 → 2026-10-15 A (-264d) | 90% → 100% | 32d → none |
| CON-LEG101-LR-9590 | Installation of Stand rack 42U- 19" [Local – 01 Segment-01] |  | 2027-07-06 → 2026-10-15 A (-264d) | 90% → 100% | 32d → none |
| CON-LEG101-LR-9610 | Installation of IP Outdoor CCTV POE Camera,5 MP, Metal Housing [Local – 01 Segment-01] |  | 2027-07-07 → 2026-10-15 A (-265d) | 90% → 100% | 32d → none |
| CON-LEG101-LR-9690 | Installation of Outdoor PTZ IP66 [Local – 01 Segment-01] |  | 2027-07-07 → 2026-10-15 A (-265d) | 90% → 100% | 32d → none |
| CON-LEG101-LR-9850 | Installation of Horizontal Power Distribution Unit (min 8 outlets) [Local – 01 Segment-01] |  | 2027-07-14 → 2026-10-15 A (-272d) | 90% → 100% | 32d → none |

| ID | Task | Start | Finish | Complete | Total float |
| --- | --- | --- | --- | --- | --- |
| CON-LEG101-LR-9940 | Installation of Short Range wireless point to point wireless bridge [Local – 01 Segment-01] |  | 2027-07-14 → 2026-10-15 A (-272d) | 90% → 100% | 32d → none |
| CON-LEG101-LR-8620 | Installation of Low Voltage Cables for CCTV feeding system and GSM [Local – 01 Segment-01] |  | 2027-07-03 → 2026-10-15 A (-261d) | 60% → 100% | 32d → none |
| CON-LEG101-LR-9780 | Installation of Security workstation with 1 x 19" LED screen [Local – 01 Segment-01] | 2027-07-07 → 2027-07-04 (-3d) | 2027-07-08 → 2027-07-04 (-4d) |  | 32d → 35.6d |
| CON-LEG101-LR-9790 | Installation of LED Screen 43" (24/7 operation) with Ethernet decoders [Local – 01 Segment-01] | 2027-07-08 → 2027-07-05 (-3d) | 2027-07-11 → 2027-07-06 (-5d) |  | 32d → 35.6d |
| CON-LEG101-LR-9830 | Installation of Network Video Recorder 4k 64 Channel [Local – 01 Segment-01] | 2027-07-11 → 2027-07-07 (-4d) | 2027-07-12 → 2027-07-07 (-5d) |  | 32d → 35.6d |
| CON-LEG101-LR-9840 | Installation of Keypad [Local – 01 Segment-01] | 2027-07-12 → 2027-07-08 (-4d) | 2027-07-14 → 2027-07-10 (-4d) |  | 32d → 35.6d |
| 12 | **Earthing System** | 2027-07-14 → 2027-07-11 (-3d) | 2027-07-17 → 2027-07-12 (-5d) |  |  |
| CON-LEG101-LR-8280 | Installation of Earthing for Distribution panels,SL feeder pillars, KWH, Unit substations and RMU [Local – 01 Segment-01 | 2027-07-14 → 2027-07-11 (-3d) | 2027-07-17 → 2027-07-12 (-5d) |  | 32d → 35.6d |
| 9 | **Road Lighting** |  | 2027-07-28 → 2027-07-31 (+3d) |  |  |
| CON-LEG101-LR-7420 | Installation of Unit Substation Including concrete foundations and fencing [Local – 01 Segment-01] |  | 2027-07-07 → 2027-07-10 (+3d) |  | -110.65d → -103.65d |
| CON-LEG101-LR-8430 | Installation of Street Lighting feeder pillars / Lighting panels [Local – 01 Segment-01] |  | 2027-06-27 → 2026-10-25 A (-245d) | 90% → 100% | -103.55d → none |
| CON-LEG101-LR-8330 | Installation of Earthing for Streetlighting feeders for every end pole circuits. [Local – 01 Segment-01] |  | 2027-07-28 → 2027-07-31 (+3d) |  | -110.65d → -103.65d |
| CON-LEG101-LR-7500 | Installation of Ring Main Unit RMU [Local – 01 Segment-01] | 2027-07-07 → 2027-07-10 (+3d) | 2027-07-25 → 2027-07-27 (+2d) |  | -110.65d → -103.65d |
| 2 | **LOCAL - 01 Segment-02 (From 1+066 to 2+133)** |  | 2027-08-03 → 2027-08-05 (+2d) |  |  |
| 1 | **Electrical Works** |  | 2027-07-29 → 2027-08-01 (+3d) |  |  |
| 3 | **Low Voltage** |  | 2027-07-29 → 2027-08-01 (+3d) |  |  |
| CON-LEG101-LR-8770 | Installation of Earthing System [Local – 01 Segment-02] |  | 2027-07-29 → 2027-08-01 (+3d) |  | 21.35d → 19.35d |
| 12 | **Earthing System** |  | 2027-08-03 → 2027-08-05 (+2d) |  |  |
| CON-LEG101-LR-8290 | Installation of Earthing for Distribution panels,SL feeder pillars, KWH, Unit substations and RMU [Local – 01 Segment-02 |  | 2027-08-03 → 2027-08-05 (+2d) |  | -110.65d → -103.65d |
| 9 | **Road Lighting** |  | 2027-06-29 → 2027-07-05 (+6d) |  |  |
| CON-LEG101-LR-8340 | Installation of Earthing for Streetlighting feeders for every end pole circuits. [Local – 01 Segment-02] |  | 2027-06-29 → 2027-07-05 (+6d) |  | -103.55d → -104d |
| 3 | **LOCAL - 01 Segment-03 (From 2+133 to 3+200)** |  | 2027-07-04 → 2027-07-10 (+6d) |  |  |
| 5 | **TSE Network** |  | 2026-11-17 → 2026-11-24 (+7d) |  |  |
| 1 | **Valves/Chamber** |  | 2026-11-17 → 2026-11-24 (+7d) |  |  |
| CON-LEG101-LR-15040 | Installation of Air Valve chambers [Local – 01 Segment-03] |  | 2026-11-17 → 2026-11-24 (+7d) |  | 89.5d → 88.75d |
| CON-LEG101-LR-2630 | Installation of Wash out chambers [Local – 01 Segment-03] |  | 2026-11-16 → 2026-11-23 (+7d) |  | 89.5d → 88.75d |
| 6 | **Public Water Utility Distribution** |  | 2026-11-17 → 2026-11-24 (+7d) |  |  |
| 1 | **Valves/Chamber** |  | 2026-11-17 → 2026-11-24 (+7d) |  |  |
| CON-LEG101-LR-1270 | Installation of Air Valve chambers [Local – 01 Segment-03] |  | 2026-11-17 → 2026-11-24 (+7d) |  | 154d → 154.4d |
| CON-LEG101-LR-1230 | Installation of Wash out chambers [Local – 01 Segment-03] |  | 2026-11-16 → 2026-11-23 (+7d) |  | 154d → 154.4d |
| 10 | **Telecommunications** |  | 2027-06-19 → 2027-06-07 (-12d) |  |  |
| CON-LEG101-LR-9350 | Installation of Reinforced concrete manhole [Local – 01 Segment-03] |  | 2027-06-19 → 2027-06-07 (-12d) | 65% → 70% | -19.25d → -3.5d |
| CON-LEG101-LR-8850 | Installation of Sand and soil encased duct banks for primary network [Local – 01 Segment-03] |  | 2027-05-25 → 2027-05-27 (+2d) | 65% → 90% | -19.25d → -3.5d |
| CON-LEG101-LR-8950 | Installation of Concrete encased duct banks for primary network [Local – 01 Segment-03] |  | 2027-05-30 → 2027-05-29 (-1d) | 65% → 90% | -19.25d → -3.5d |
| CON-LEG101-LR-9050 | Installation of Sand encased duct banks for secondary network [Local – 01 Segment-03] |  | 2027-06-03 → 2027-05-30 (-4d) | 65% → 90% | -19.25d → -3.5d |
| CON-LEG101-LR-9150 | Installation of Sand and soil encased duct banks, for combined network of primary and secondary [Local – 01 Segment-03 |  | 2027-06-12 → 2027-06-01 (-11d) | 65% → 90% | -19.25d → -3.5d |
| 12 | **Earthing System** | 2027-06-20 → 2027-06-27 (+7d) | 2027-06-29 → 2027-07-06 (+7d) |  |  |
| CON-LEG101-LR-8300 | Installation of Earthing for Distribution panels,SL feeder pillars, KWH, Unit substations and RMU [Local – 01 Segment-03 | 2027-06-20 → 2027-06-27 (+7d) | 2027-06-29 → 2027-07-06 (+7d) |  | -20.7d → -20.3d |
| 9 | **Road Lighting** |  | 2027-07-04 → 2027-07-10 (+6d) |  |  |
| CON-LEG101-LR-8450 | Installation of Street Lighting feeder pillars / Lighting panels [Local – 01 Segment-03] |  | 2027-06-20 → 2027-06-27 (+7d) |  | -96.15d → -96.9d |
| CON-LEG101-LR-8350 | Installation of Earthing for Streetlighting feeders for every end pole circuits. [Local – 01 Segment-03] |  | 2027-07-04 → 2027-07-10 (+6d) |  | -103.55d → -104d |
| 2 | **Local – 02** |  | 2027-07-12 → 2027-07-18 (+6d) |  |  |
| 5 | **TSE Network** |  | 2026-11-17 → 2026-11-24 (+7d) |  |  |
| 1 | **Valves/Chamber** |  | 2026-11-17 → 2026-11-24 (+7d) |  |  |
| CON-LEG101-LR-2410 | Installation of Wash out Valves [Local – 02 ] |  | 2026-11-17 → 2026-11-24 (+7d) |  | 37.1d → 31.1d |
| CON-LEG101-LR-2710 | Installation of Wash out chambers [Local – 02 ] |  | 2026-11-17 → 2026-11-24 (+7d) |  | 37.1d → 31.1d |
| 6 | **Public Water Utility Distribution** |  | 2026-11-18 → 2026-11-25 (+7d) |  |  |
| 1 | **Valves/Chamber** |  | 2026-11-18 → 2026-11-25 (+7d) |  |  |
| CON-LEG101-LR-15080 | Installation of Air Valve chambers [Local – 02 ] |  | 2026-11-17 → 2026-11-24 (+7d) |  | 63.65d → 57.65d |
| CON-LEG101-LR-1030 | Installation of Gate (Sluice) valves (Direct buried) [Local – 02 ] |  | 2026-11-18 → 2026-11-25 (+7d) |  | 63.65d → 57.65d |
| CON-LEG101-LR-15070 | Installation of Wash out chambers [Local – 02 ] |  | 2026-11-16 → 2026-11-23 (+7d) |  | 37.9d → 31.9d |
| 1 | **Electrical Works** |  | 2027-07-11 → 2027-07-18 (+7d) |  |  |
| 3 | **Low Voltage** |  | 2027-07-11 → 2027-07-18 (+7d) |  |  |
| CON-LEG101-LR-8490 | Installation of Low Voltage Distribution Panel [Local – 02 ] | 2027-06-20 → 2027-06-27 (+7d) | 2027-06-30 → 2027-07-07 (+7d) |  | -101.25d → -102d |
| CON-LEG101-LR-8540 | Installation of KWH Meters Walls [Local – 02 ] | 2027-07-01 → 2027-07-08 (+7d) | 2027-07-08 → 2027-07-15 (+7d) |  | 36.6d → 30.6d |
| CON-LEG101-LR-8790 | Installation of Earthing System [Local – 02 ] | 2027-07-10 → 2027-07-17 (+7d) | 2027-07-11 → 2027-07-18 (+7d) |  | 36.6d → 30.6d |
| 11 | **CCTV feeding system and GSM** |  | 2027-06-28 → 2027-07-04 (+6d) |  |  |
| CON-LEG101-LR-9470 | Installation of 8POE ports Industrial Switches for remote poles [Local – 02 ] |  | 2027-05-22 → 2026-09-14 A (-250d) | 90% → 100% | -76.25d → none |
| CON-LEG101-LR-9570 | Installation of Server [Local – 02 ] |  | 2027-05-23 → 2026-09-14 A (-251d) | 90% → 100% | -76.25d → none |
| CON-LEG101-LR-9640 | Installation of IP Outdoor CCTV POE Camera,5 MP, Metal Housing [Local – 02 ] |  | 2027-05-24 → 2026-09-14 A (-252d) | 90% → 100% | -76.25d → none |
| CON-LEG101-LR-9720 | Installation of Outdoor PTZ IP66 [Local – 02 ] |  | 2027-05-24 → 2026-09-14 A (-252d) | 90% → 100% | -76.25d → none |
| CON-LEG101-LR-9970 | Installation of Short Range wireless point to point wireless bridge [Local – 02 ] |  | 2027-06-28 → 2026-09-14 A (-287d) | 90% → 100% | -98.95d → none |
| CON-LEG101-LR-9800 | Installation of LED Screen 43" (24/7 operation) with Ethernet decoders [Local – 02 ] | 2027-06-20 → 2027-06-27 (+7d) | 2027-06-27 → 2027-07-04 (+7d) |  | -98.95d → -99d |
| 12 | **Earthing System** | 2027-07-05 → 2027-07-12 (+7d) | 2027-07-12 → 2027-07-18 (+6d) |  |  |
| CON-LEG101-LR-8310 | Installation of Earthing for Distribution panels,SL feeder pillars, KWH, Unit substations and RMU [Local – 02 ] | 2027-07-05 → 2027-07-12 (+7d) | 2027-07-12 → 2027-07-18 (+6d) |  | -104.95d → -105d |
| 9 | **Road Lighting** |  | 2027-07-08 → 2027-07-14 (+6d) |  |  |
| CON-LEG101-LR-8460 | Installation of Street Lighting feeder pillars / Lighting panels [Local – 02 ] |  | 2027-07-05 → 2026-10-28 A (-250d) | 90% → 100% | -104.95d → none |
| CON-LEG101-LR-8360 | Installation of Earthing for Streetlighting feeders for every end pole circuits. [Local – 02 ] |  | 2027-07-08 → 2027-07-14 (+6d) |  | -104.95d → -105d |
| CON-LEG101-LR-7430 | Installation of Unit Substation Including concrete foundations and fencing [Local – 02 ] | 2027-05-22 → 2027-05-29 (+7d) | 2027-05-29 → 2027-06-05 (+7d) |  | -86.95d → -87d |
| CON-LEG101-LR-7510 | Installation of Ring Main Unit RMU [Local – 02 ] | 2027-06-20 → 2027-06-27 (+7d) | 2027-07-04 → 2027-07-11 (+7d) |  | -104.95d → -105d |

| ID | Task | Start | Finish | Complete | Total float |
| --- | --- | --- | --- | --- | --- |
| 3 | **Local – 03** |  | 2027-08-21 → 2027-08-26 (+5d) |  |  |
| 5 | **TSE Network** |  | 2026-11-19 → 2026-11-26 (+7d) |  |  |
| 1 | **Valves/Chamber** |  | 2026-11-19 → 2026-11-26 (+7d) |  |  |
| CON-LEG101-LR-2720 | Installation of Air Valve chambers [Local – 03 ] |  | 2026-11-19 → 2026-11-26 (+7d) |  | 37.1d → 31.1d |
| CON-LEG101-LR-2640 | Installation of Wash out chambers [Local – 03 ] |  | 2026-11-18 → 2026-11-25 (+7d) |  | 37.1d → 31.1d |
| 6 | **Public Water Utility Distribution** |  | 2026-11-21 → 2026-11-28 (+7d) |  |  |
| 1 | **Valves/Chamber** |  | 2026-11-21 → 2026-11-28 (+7d) |  |  |
| CON-LEG101-LR-15110 | Installation of Air Valve chambers [Local – 03 ] |  | 2026-11-21 → 2026-11-28 (+7d) |  | 37.1d → 31.1d |
| 1 | **Electrical Works** |  | 2027-07-03 → 2027-07-10 (+7d) |  |  |
| 3 | **Low Voltage** |  | 2027-07-03 → 2027-07-10 (+7d) |  |  |
| CON-LEG101-LR-7820 | Excavation works for Low Voltage Cables [Local – 03 ] | 2027-06-02 → 2027-06-09 (+7d) | 2027-06-15 → 2027-06-22 (+7d) |  | -117.55d → -118.3d |
| CON-LEG101-LR-7920 | Installation of Low Voltage Cables [Local – 03 ] | 2027-06-16 → 2027-06-23 (+7d) | 2027-06-29 → 2027-07-06 (+7d) |  | -117.55d → -118.3d |
| CON-LEG101-LR-8800 | Installation of Earthing System [Local – 03 ] | 2027-06-30 → 2027-07-07 (+7d) | 2027-07-03 → 2027-07-10 (+7d) |  | -117.55d → -118.3d |
| 10 | **Telecommunications** |  | 2027-07-27 → 2027-08-03 (+7d) |  |  |
| CON-LEG101-LR-8870 | Installation of Sand and soil encased duct banks for primary network [Local – 03 ] |  | 2027-06-29 → 2027-07-06 (+7d) |  | -114.45d → -115.2d |
| CON-LEG101-LR-9070 | Installation of Sand encased duct banks for secondary network [Local – 03 ] |  | 2027-07-08 → 2027-07-15 (+7d) |  | -117.55d → -118.3d |
| CON-LEG101-LR-9170 | Installation of Sand and soil encased duct banks, for combined network of primary and secondary [Local – 03 ] |  | 2027-07-22 → 2027-07-29 (+7d) |  | -117.55d → -118.3d |
| CON-LEG101-LR-9270 | Installation of Concrete encased duct banks for for combined network of primary and secondary [Local – 03 ] |  | 2027-07-27 → 2027-08-03 (+7d) |  | -117.55d → -118.3d |
| 11 | **CCTV feeding system and GSM** |  | 2027-07-15 → 2026-09-20 (-298d) |  |  |
| CON-LEG101-LR-9980 | Installation of Short Range wireless point to point wireless bridge [Local – 03 ] |  | 2027-07-15 → 2026-09-20 A (-298d) | 90% → 100% | 18.4d → none |
| CON-LEG101-LR-8590 | Excavation works for Low Voltage Cables for CCTV feeding system and GSM [Local – 03 ] |  | 2027-07-10 → 2026-09-20 A (-293d) | 90% → 100% | -6.3d → none |
| CON-LEG101-LR-8660 | Installation of Low Voltage Cables for CCTV feeding system and GSM [Local – 03 ] |  | 2027-07-12 → 2026-09-20 A (-295d) | 90% → 100% | 18.4d → none |
| CON-LEG101-LR-9480 | Installation of 8POE ports Industrial Switches for remote poles [Local – 03 ] |  | 2027-07-12 → 2026-09-20 A (-295d) | 90% → 100% | 18.4d → none |
| CON-LEG101-LR-9650 | Installation of IP Outdoor CCTV POE Camera,5 MP, Metal Housing [Local – 03 ] |  | 2027-07-13 → 2026-09-20 A (-296d) | 90% → 100% | 18.4d → none |
| CON-LEG101-LR-9730 | Installation of Outdoor PTZ IP66 [Local – 03 ] |  | 2027-07-14 → 2026-09-20 A (-297d) | 90% → 100% | 18.4d → none |
| 12 | **Earthing System** | 2027-08-12 → 2027-08-18 (+6d) | 2027-08-21 → 2027-08-26 (+5d) |  |  |
| CON-LEG101-LR-15170 | Installation of Earthing for Distribution panels,SL feeder pillars, KWH, Unit substations and RMU [Local – 03 ] | 2027-08-12 → 2027-08-18 (+6d) | 2027-08-21 → 2027-08-26 (+5d) |  | -6.3d → -11.3d |
| 9 | **Road Lighting** |  | 2027-08-12 → 2027-08-18 (+6d) |  |  |
| CON-LEG101-LR-8120 | Installation of Lighting poles [Local – 03 ] |  | 2027-06-24 → 2027-06-28 (+4d) | 50% → 70% | -102.5d → -105.5d |
| CON-LEG101-LR-7440 | Installation of Unit Substation Including concrete foundations and fencing [Local – 03 ] |  | 2027-07-19 → 2027-07-25 (+6d) |  | -6.3d → -11.3d |
| CON-LEG101-LR-8220 | Installation of Street Lighting Luminaire [Local – 03 ] |  | 2027-06-28 → 2027-06-30 (+2d) | 50% → 70% | 3.6d → 2d |
| CON-LEG101-LR-7520 | Installation of Ring Main Unit RMU [Local – 03 ] | 2027-07-19 → 2027-07-25 (+6d) | 2027-08-05 → 2027-08-11 (+6d) |  | -6.3d → -11.3d |
| CON-LEG101-LR-8370 | Installation of Earthing for Streetlighting feeders for every end pole circuits. [Local – 03 ] | 2027-08-05 → 2027-08-11 (+6d) | 2027-08-12 → 2027-08-18 (+6d) |  | -6.3d → -11.3d |
| 4 | **Local – 04** |  | 2027-10-10 → 2027-10-17 (+7d) |  |  |
| 5 | **TSE Network** |  | 2027-05-04 → 2027-05-11 (+7d) |  |  |
| 2 | **Pipe Work** |  | 2027-01-24 → 2027-01-31 (+7d) |  |  |
| CON-LEG101-LR-1350 | Excavation for TSE Network [Local – 04 ] |  | 2026-12-24 → 2026-12-31 (+7d) |  | -60.24d → -66.24d |
| CON-LEG101-LR-1470 | Granular bedding for TSE Network [Local – 04 ] |  | 2026-12-26 → 2027-01-02 (+7d) |  | -60.24d → -66.24d |
| CON-LEG101-LR-1580 | Installation of Pipe for TSE Network [Local – 04 ] |  | 2027-01-02 → 2027-01-09 (+7d) |  | -60.24d → -66.24d |
| CON-LEG101-LR-1910 | Granular Surround for TSE Network [Local – 04 ] |  | 2027-01-16 → 2027-01-23 (+7d) |  | -60.24d → -66.24d |
| CON-LEG101-LR-2020 | Installation of Micron Marker Magnetic Tape [Local – 04 ] |  | 2027-01-17 → 2027-01-24 (+7d) |  | -60.24d → -66.24d |
| CON-LEG101-LR-2130 | Backfilling to Subgrade Elevation [Local – 04 ] |  | 2027-01-24 → 2027-01-31 (+7d) |  | -60.24d → -66.24d |
| CON-LEG101-LR-1690 | Testing for TSE Network [Local – 04 ] | 2027-01-02 → 2027-01-09 (+7d) | 2027-01-09 → 2027-01-16 (+7d) |  | -60.24d → -66.24d |
| CON-LEG101-LR-1810 | Concrete encasement, pipe dia 110 mm [Local – 04 ] | 2027-01-09 → 2027-01-16 (+7d) | 2027-01-12 → 2027-01-19 (+7d) |  | -60.24d → -66.24d |
| 1 | **Valves/Chamber** | 2027-01-17 → 2027-01-24 (+7d) | 2027-05-04 → 2027-05-11 (+7d) |  |  |
| CON-LEG101-LR-2730 | Installation of Air Valve chambers [Local – 04 ] | 2027-01-17 → 2027-01-24 (+7d) | 2027-02-15 → 2027-02-23 (+8d) |  | -44.48d → -50.48d |
| CON-LEG101-LR-15060 | Installation of Wash-out Valve chambers [Local – 04 ] | 2027-02-15 → 2027-02-23 (+8d) | 2027-03-13 → 2027-03-20 (+7d) |  | -44.48d → -50.48d |
| CON-LEG101-LR-2240 | Installation of Gate (Sluice) valves (Direct buried) [Local – 04 ] | 2027-02-15 → 2027-02-23 (+8d) | 2027-02-27 → 2027-03-06 (+7d) |  | -32.48d → -38.48d |
| CON-LEG101-LR-2350 | Installation of Wash-out Valves [Local – 04 ] | 2027-03-13 → 2027-03-20 (+7d) | 2027-03-30 → 2027-04-06 (+7d) |  | -44.48d → -50.48d |
| CON-LEG101-LR-2430 | Installation of Air Valves [Local – 04 ] | 2027-03-30 → 2027-04-06 (+7d) | 2027-04-17 → 2027-04-24 (+7d) |  | -44.48d → -50.48d |
| CON-LEG101-LR-2510 | Installation of Fire Hydrant [Local – 04 ] | 2027-04-17 → 2027-04-24 (+7d) | 2027-05-04 → 2027-05-11 (+7d) |  | -44.48d → -50.48d |
| 6 | **Public Water Utility Distribution** |  | 2027-04-19 → 2027-04-26 (+7d) |  |  |
| 2 | **Pipe Work** |  | 2027-01-24 → 2027-01-31 (+7d) |  |  |
| CON-LEG101-LR-10090 | Excavation for Public Water Utility Distribution Piping [Local – 04 ] |  | 2026-12-26 → 2027-01-02 (+7d) |  | -60.2d → -66.2d |
| CON-LEG101-LR-10190 | Granular bedding for Public Water Utility Distribution Piping [Local – 04 ] |  | 2026-12-27 → 2027-01-03 (+7d) |  | -60.2d → -66.2d |
| CON-LEG101-LR-10290 | Installation of Pipe for Public Water Utility Distribution Piping [Local – 04 ] |  | 2027-01-03 → 2027-01-10 (+7d) |  | -60.2d → -66.2d |
| CON-LEG101-LR-10590 | Granular Surround for Public Water Utility Distribution Piping [Local – 04 ] |  | 2027-01-16 → 2027-01-23 (+7d) |  | -60.2d → -66.2d |
| CON-LEG101-LR-10390 | Testing for Public Water Utility Distribution Piping [Local – 04 ] | 2027-01-03 → 2027-01-10 (+7d) | 2027-01-09 → 2027-01-16 (+7d) |  | -60.2d → -66.2d |
| CON-LEG101-LR-10490 | Concrete encasement, pipe dia 110 mm [Local – 04 ] | 2027-01-09 → 2027-01-16 (+7d) | 2027-01-12 → 2027-01-19 (+7d) |  | -60.2d → -66.2d |
| CON-LEG101-LR-10690 | Installation of Micron Marker Magnetic Tape [Local – 04 ] | 2027-01-16 → 2027-01-23 (+7d) | 2027-01-19 → 2027-01-26 (+7d) |  | -60.2d → -66.2d |
| CON-LEG101-LR-10790 | Backfilling to Subgrade Elevation [Local – 04 ] | 2027-01-19 → 2027-01-26 (+7d) | 2027-01-24 → 2027-01-31 (+7d) |  | -60.2d → -66.2d |
| 1 | **Valves/Chamber** | 2027-03-13 → 2027-03-20 (+7d) | 2027-04-19 → 2027-04-26 (+7d) |  |  |
| CON-LEG101-LR-1280 | Installation of Air Valve chambers [Local – 04 ] | 2027-03-13 → 2027-03-20 (+7d) | 2027-04-05 → 2027-04-12 (+7d) |  | 54.52d → 64.52d |
| CON-LEG101-LR-1050 | Installation of Gate (Sluice) valves (Direct buried) [Local – 04 ] | 2027-04-05 → 2027-04-12 (+7d) | 2027-04-12 → 2027-04-19 (+7d) |  | 54.52d → 64.52d |
| CON-LEG101-LR-1180 | Installation of Air Valves [Local – 04 ] | 2027-04-12 → 2027-04-19 (+7d) | 2027-04-19 → 2027-04-26 (+7d) |  | 54.52d → 64.52d |
| 8 | **Electrical Works** | 2027-06-03 → 2027-06-10 (+7d) | 2027-07-18 → 2027-07-25 (+7d) |  |  |
| 3 | **Low Voltage** | 2027-06-03 → 2027-06-10 (+7d) | 2027-07-18 → 2027-07-25 (+7d) |  |  |
| CON-LEG101-LR-7830 | Excavation works for Low Voltage Cables [Local – 04 ] | 2027-06-03 → 2027-06-10 (+7d) | 2027-06-17 → 2027-06-24 (+7d) |  | -163d → -169d |
| CON-LEG101-LR-8030 | Installation of Low Voltage Cables Duct Banks [Local – 04 ] | 2027-06-19 → 2027-06-26 (+7d) | 2027-06-29 → 2027-07-06 (+7d) |  | -163d → -169d |
| CON-LEG101-LR-7930 | Installation of Low Voltage Cables [Local – 04 ] | 2027-06-30 → 2027-07-07 (+7d) | 2027-07-14 → 2027-07-21 (+7d) |  | -102d → -108d |

| ID | Task | Start | Finish | Complete | Total float |
| --- | --- | --- | --- | --- | --- |
| CON-LEG101-LR-8810 | Installation of Earthing System [Local – 04 ] | 2027-07-15 → 2027-07-22 (+7d) | 2027-07-18 → 2027-07-25 (+7d) |  | -39.4d → -45.4d |
| 10 | **Telecommunications** | 2027-06-30 → 2027-07-07 (+7d) | 2027-09-25 → 2027-10-02 (+7d) |  |  |
| CON-LEG101-LR-8880 | Installation of Sand and soil encased duct banks for primary network [Local – 04 ] | 2027-06-30 → 2027-07-07 (+7d) | 2027-07-19 → 2027-07-26 (+7d) |  | -163d → -169d |
| CON-LEG101-LR-8980 | Installation of Concrete encased duct banks for primary network [Local – 04 ] | 2027-07-20 → 2027-07-27 (+7d) | 2027-07-26 → 2027-08-02 (+7d) |  | -163d → -169d |
| CON-LEG101-LR-9080 | Installation of Sand encased duct banks for secondary network [Local – 04 ] | 2027-07-27 → 2027-08-03 (+7d) | 2027-08-03 → 2027-08-10 (+7d) |  | -163d → -169d |
| CON-LEG101-LR-9180 | Installation of Sand and soil encased duct banks, for combined network of primary and secondary [Local – 04 ] | 2027-08-04 → 2027-08-11 (+7d) | 2027-08-24 → 2027-08-31 (+7d) |  | -163d → -169d |
| CON-LEG101-LR-9280 | Installation of Concrete encased duct banks for for combined network of primary and secondary [Local – 04 ] | 2027-08-25 → 2027-09-01 (+7d) | 2027-08-30 → 2027-09-06 (+7d) |  | -163d → -169d |
| CON-LEG101-LR-9380 | Installation of Reinforced concrete manhole [Local – 04 ] | 2027-08-31 → 2027-09-07 (+7d) | 2027-09-25 → 2027-10-02 (+7d) |  | -163d → -169d |
| 11 | **CCTV feeding system and GSM** | 2027-07-20 → 2027-07-27 (+7d) | 2027-09-30 → 2027-10-07 (+7d) |  |  |
| CON-LEG101-LR-8600 | Excavation works for Low Voltage Cables for CCTV feeding system and GSM [Local – 04 ] | 2027-07-20 → 2027-07-27 (+7d) | 2027-08-02 → 2027-08-09 (+7d) |  | -40.4d → -46.4d |
| CON-LEG101-LR-8670 | Installation of Low Voltage Cables for CCTV feeding system and GSM [Local – 04 ] | 2027-08-03 → 2027-08-10 (+7d) | 2027-08-17 → 2027-08-24 (+7d) |  | -40.4d → -46.4d |
| CON-LEG101-LR-9490 | Installation of 8POE ports Industrial Switches for remote poles [Local – 04 ] | 2027-08-18 → 2027-08-25 (+7d) | 2027-08-25 → 2027-09-01 (+7d) |  | -40.4d → -46.4d |
| CON-LEG101-LR-9660 | Installation of IP Outdoor CCTV POE Camera,5 MP, Metal Housing [Local – 04 ] | 2027-08-26 → 2027-09-02 (+7d) | 2027-09-04 → 2027-09-11 (+7d) |  | -40.4d → -46.4d |
| CON-LEG101-LR-9740 | Installation of Outdoor PTZ IP66 [Local – 04 ] | 2027-09-05 → 2027-09-12 (+7d) | 2027-09-15 → 2027-09-22 (+7d) |  | -40.4d → -46.4d |
| CON-LEG101-LR-9990 | Installation of Short Range wireless point to point wireless bridge [Local – 04 ] | 2027-09-16 → 2027-09-25 (+9d) | 2027-09-30 → 2027-10-07 (+7d) |  | -40.4d → -46.4d |
| 12 | **Earthing System** | 2027-10-02 → 2027-10-09 (+7d) | 2027-10-10 → 2027-10-17 (+7d) |  |  |
| CON-LEG101-LR-15160 | Installation of Earthing for Distribution panels,SL feeder pillars, KWH, Unit substations and RMU [Local – 04 ] | 2027-10-02 → 2027-10-09 (+7d) | 2027-10-10 → 2027-10-17 (+7d) |  | -40.4d → -46.4d |
| 9 | **Road Lighting** | 2027-06-24 → 2027-06-28 (+4d) | 2027-09-02 → 2027-09-09 (+7d) |  |  |
| CON-LEG101-LR-8130 | Installation of Lighting poles [Local – 04 ] | 2027-06-24 → 2027-06-28 (+4d) | 2027-07-15 → 2027-07-19 (+4d) |  | -102.5d → -105.5d |
| CON-LEG101-LR-8230 | Installation of Street Lighting Luminaire [Local – 04 ] | 2027-07-15 → 2027-07-19 (+4d) | 2027-07-22 → 2027-07-26 (+4d) |  | -7.9d → -10.9d |
| CON-LEG101-LR-7450 | Installation of Unit Substation Including concrete foundations and fencing [Local – 04 ] | 2027-08-03 → 2027-08-10 (+7d) | 2027-08-10 → 2027-08-17 (+7d) |  | -17.4d → -23.4d |
| CON-LEG101-LR-7530 | Installation of Ring Main Unit RMU [Local – 04 ] | 2027-08-11 → 2027-08-18 (+7d) | 2027-08-26 → 2027-09-02 (+7d) |  | -17.4d → -23.4d |
| CON-LEG101-LR-8380 | Installation of Earthing for Streetlighting feeders for every end pole circuits. [Local – 04 ] | 2027-08-28 → 2027-09-04 (+7d) | 2027-09-02 → 2027-09-09 (+7d) |  | -17.4d → -23.4d |
| 5 | **Local – 05** |  | 2027-08-02 → 2027-08-05 (+3d) |  |  |
| 5 | **TSE Network** |  | 2026-12-05 → 2026-12-12 (+7d) |  |  |
| 1 | **Valves/Chamber** |  | 2026-12-05 → 2026-12-12 (+7d) |  |  |
| CON-LEG101-LR-2740 | Installation of Air Valve chambers [Local – 05 ] |  | 2026-12-05 → 2026-12-12 (+7d) |  | 165.84d → 175.84d |
| CON-LEG101-LR-2660 | Installation of Wash out chambers [Local – 05 ] |  | 2026-12-03 → 2026-12-10 (+7d) |  | 165.84d → 175.84d |
| 6 | **Public Water Utility Distribution** |  | 2026-12-06 → 2026-12-13 (+7d) |  |  |
| 1 | **Valves/Chamber** |  | 2026-12-06 → 2026-12-13 (+7d) |  |  |
| CON-LEG101-LR-1240 | Installation of Wash out chambers [Local – 05 ] |  | 2026-12-06 → 2026-12-13 (+7d) |  | 214.44d → 208.44d |
| 1 | **Electrical Works** |  | 2027-06-09 → 2027-06-16 (+7d) |  |  |
| 3 | **Low Voltage** |  | 2027-06-09 → 2027-06-16 (+7d) |  |  |
| CON-LEG101-LR-8820 | Installation of Earthing System [Local – 05 ] | 2027-06-08 → 2027-06-15 (+7d) | 2027-06-09 → 2027-06-16 (+7d) |  | 13d → 24d |
| 10 | **Telecommunications** |  | 2027-06-21 → 2027-06-16 (-5d) |  |  |
| CON-LEG101-LR-9390 | Installation of Reinforced concrete manhole [Local – 05 ] |  | 2027-06-21 → 2026-10-21 A (-243d) | 90% → 100% | 4.2d → none |
| CON-LEG101-LR-9090 | Installation of Sand encased duct banks for secondary network [Local – 05 ] |  | 2027-06-13 → 2027-06-15 (+2d) | 40% → 90% | 4.2d → 24.2d |
| CON-LEG101-LR-9190 | Installation of Sand and soil encased duct banks, for combined network of primary and secondary [Local – 05 ] |  | 2027-06-20 → 2027-06-16 (-4d) | 40% → 90% | 4.2d → 24.2d |
| CON-LEG101-LR-10000 | Installation of Short Range wireless point to point wireless bridge [Local – 05 ] |  | 2027-06-28 → 2026-09-23 A (-278d) | 90% → 100% | 45.6d → none |
| CON-LEG101-LR-8610 | Excavation works for Low Voltage Cables for CCTV feeding system and GSM [Local – 05 ] |  | 2027-06-08 → 2026-09-23 A (-258d) | 90% → 100% | 50.3d → none |
| CON-LEG101-LR-8680 | Installation of Low Voltage Cables for CCTV feeding system and GSM [Local – 05 ] |  | 2027-06-08 → 2026-09-23 A (-258d) | 90% → 100% | 54.2d → none |
| CON-LEG101-LR-9440 | Installation of Fiber Optic Patch Panel 12 port [Local – 05 ] |  | 2027-06-09 → 2026-09-23 A (-259d) | 90% → 100% | 54.2d → none |
| CON-LEG101-LR-9500 | Installation of 8POE ports Industrial Switches for remote poles [Local – 05 ] |  | 2027-06-09 → 2026-09-23 A (-259d) | 90% → 100% | 54.2d → none |
| CON-LEG101-LR-9530 | Installation of Core Switch [Local – 05 ] |  | 2027-06-10 → 2026-09-23 A (-260d) | 90% → 100% | 54.2d → none |
| CON-LEG101-LR-9550 | Installation of Access Switch 48 port [Local – 05 ] |  | 2027-06-10 → 2026-09-23 A (-260d) | 90% → 100% | 54.2d → none |
| CON-LEG101-LR-9580 | Installation of Server [Local – 05 ] |  | 2027-06-12 → 2026-09-23 A (-262d) | 90% → 100% | 54.2d → none |
| CON-LEG101-LR-9670 | Installation of IP Outdoor CCTV POE Camera,5 MP, Metal Housing [Local – 05 ] |  | 2027-06-26 → 2026-09-23 A (-276d) | 90% → 100% | 45.6d → none |
| CON-LEG101-LR-9750 | Installation of Outdoor PTZ IP66 [Local – 05 ] |  | 2027-06-26 → 2026-09-23 A (-276d) | 90% → 100% | 45.6d → none |
| CON-LEG101-LR-9860 | Installation of Horizontal Power Distribution Unit (min 8 outlets) [Local – 05 ] |  | 2027-06-28 → 2026-09-23 A (-278d) | 90% → 100% | 45.6d → none |
| CON-LEG101-LR-9600 | Installation of Stand rack 42U- 19" [Local – 05 ] | 2027-06-21 → 2027-06-17 (-4d) | 2027-06-24 → 2027-06-20 (-4d) |  | 45.6d → 50.6d |
| CON-LEG101-LR-9810 | Installation of LED Screen 43" (24/7 operation) with Ethernet decoders [Local – 05 ] | 2027-06-26 → 2027-06-27 (+1d) |  |  |  |
| 12 | **Earthing System** | 2027-07-29 → 2027-08-02 (+4d) | 2027-08-01 → 2027-08-04 (+3d) |  |  |
| CON-LEG101-LR-15150 | Installation of Earthing for Distribution panels,SL feeder pillars, KWH, Unit substations and RMU [Local – 05 ] | 2027-07-29 → 2027-08-02 (+4d) | 2027-08-01 → 2027-08-04 (+3d) |  | 19.2d → 16.2d |
| 9 | **Road Lighting** |  | 2027-08-02 → 2027-08-05 (+3d) |  |  |
| CON-LEG101-LR-7460 | Installation of Unit Substation Including concrete foundations and fencing [Local – 05 ] |  | 2027-07-21 → 2027-07-25 (+4d) |  | 18.2d → 15.2d |
| CON-LEG101-LR-8390 | Installation of Earthing for Streetlighting feeders for every end pole circuits. [Local – 05 ] |  | 2027-08-02 → 2027-08-05 (+3d) |  | 18.2d → 15.2d |
| CON-LEG101-LR-7540 | Installation of Ring Main Unit RMU [Local – 05 ] | 2027-07-21 → 2027-07-25 (+4d) | 2027-07-29 → 2027-08-02 (+4d) |  | 18.2d → 15.2d |
| 6 | **Local – 06** |  | 2027-07-27 → 2027-07-31 (+4d) |  |  |
| 10 | **Telecommunications** |  | 2027-06-09 → 2027-06-16 (+7d) |  |  |
| CON-LEG101-LR-9100 | Installation of Sand encased duct banks for secondary network [Local – 06 ] |  | 2027-06-08 → 2027-06-15 (+7d) |  | 34.55d → 30.05d |
| CON-LEG101-LR-9200 | Installation of Sand and soil encased duct banks, for combined network of primary and secondary [Local – 06 ] |  | 2027-06-09 → 2027-06-16 (+7d) |  | 34.55d → 30.05d |
| 11 | **CCTV feeding system and GSM** |  | 2027-06-09 → 2026-09-24 (-258d) |  |  |
| CON-LEG101-LR-10010 | Installation of Short Range wireless point to point wireless bridge [Local – 06 ] |  | 2027-06-09 → 2026-09-24 A (-258d) | 90% → 100% | 60.8d → none |
| CON-LEG101-LR-9510 | Installation of 8POE ports Industrial Switches for remote poles [Local – 06 ] |  | 2027-06-08 → 2026-09-24 A (-257d) | 90% → 100% | 53.5d → none |
| CON-LEG101-LR-9680 | Installation of IP Outdoor CCTV POE Camera,5 MP, Metal Housing [Local – 06 ] |  | 2027-06-09 → 2026-09-24 A (-258d) | 90% → 100% | 60.8d → none |
| CON-LEG101-LR-9760 | Installation of Outdoor PTZ IP66 [Local – 06 ] |  | 2027-06-09 → 2026-09-24 A (-258d) | 90% → 100% | 60.8d → none |
| 12 | **Earthing System** | 2027-07-24 → 2027-07-27 (+3d) | 2027-07-27 → 2027-07-31 (+4d) |  |  |
| CON-LEG101-LR-15140 | Installation of Earthing for Distribution panels,SL feeder pillars, KWH, Unit substations and RMU [Local – 06 ] | 2027-07-24 → 2027-07-27 (+3d) | 2027-07-27 → 2027-07-31 (+4d) |  | 23.3d → 20.3d |
| 9 | **Road Lighting** |  | 2027-07-26 → 2027-07-29 (+3d) |  |  |
| CON-LEG101-LR-7470 | Installation of Unit Substation Including concrete foundations and fencing [Local – 06 ] |  | 2027-07-19 → 2027-07-22 (+3d) |  | 21.7d → 20.3d |

| ID | Task | Start | Finish | Complete | Total float |
| --- | --- | --- | --- | --- | --- |
| CON-LEG101-LR-8400 | Installation of Earthing for Streetlighting feeders for every end pole circuits. [Local – 06 ] |  | 2027-07-26 → 2027-07-29 (+3d) |  | 24.2d → 21.2d |
| CON-LEG101-LR-7550 | Installation of Ring Main Unit RMU [Local – 06 ] | 2027-07-19 → 2027-07-22 (+3d) | 2027-07-24 → 2027-07-27 (+3d) |  | 23.3d → 20.3d |
| 7 | **Local – 07** |  | 2027-07-28 → 2027-08-01 (+4d) |  |  |
| 11 | **CCTV feeding system and GSM** |  | 2027-06-08 → 2026-09-20 (-261d) |  |  |
| CON-LEG101-LR-10020 | Installation of Short Range wireless point to point wireless bridge [Local – 07 ] |  | 2027-06-08 → 2026-09-20 A (-261d) | 90% → 100% | 53.7d → none |
| 12 | **Earthing System** | 2027-07-24 → 2027-07-27 (+3d) | 2027-07-28 → 2027-08-01 (+4d) |  |  |
| CON-LEG101-LR-15130 | Installation of Earthing for Distribution panels,SL feeder pillars, KWH, Unit substations and RMU [Local – 07 ] | 2027-07-24 → 2027-07-27 (+3d) | 2027-07-28 → 2027-08-01 (+4d) |  | 21.9d → 18.9d |
| 9 | **Road Lighting** |  | 2027-07-26 → 2027-07-29 (+3d) |  |  |
| CON-LEG101-LR-7480 | Installation of Unit Substation Including concrete foundations and fencing [Local – 07 ] |  | 2027-07-19 → 2027-07-22 (+3d) |  | 21.9d → 18.9d |
| CON-LEG101-LR-8410 | Installation of Earthing for Streetlighting feeders for every end pole circuits. [Local – 07 ] |  | 2027-07-26 → 2027-07-29 (+3d) |  | 23.9d → 20.9d |
| CON-LEG101-LR-7560 | Installation of Ring Main Unit RMU [Local – 07 ] | 2027-07-19 → 2027-07-22 (+3d) | 2027-07-24 → 2027-07-27 (+3d) |  | 21.9d → 18.9d |
| 8 | **Local – 08** |  | 2027-07-26 → 2027-07-29 (+3d) |  |  |
| 5 | **TSE Network** |  | 2026-12-05 → 2026-12-12 (+7d) |  |  |
| 1 | **Valves/Chamber** |  | 2026-12-05 → 2026-12-12 (+7d) |  |  |
| CON-LEG101-LR-2750 | Installation of Air Valve chambers [Local – 08 ] |  | 2026-12-05 → 2026-12-12 (+7d) |  | 200d → 191.9d |
| CON-LEG101-LR-2670 | Installation of Wash out chambers [Local – 08 ] |  | 2026-12-03 → 2026-12-10 (+7d) |  | 200d → 191.9d |
| 1 | **Electrical Works** |  | 2027-06-27 → 2027-07-04 (+7d) |  |  |
| 3 | **Low Voltage** |  | 2027-06-27 → 2027-07-04 (+7d) |  |  |
| CON-LEG101-LR-8500 | Installation of Low Voltage Distribution Panel [Local – 08 ] | 2027-06-20 → 2027-06-27 (+7d) | 2027-06-27 → 2027-07-04 (+7d) |  | 31.1d → 23d |
| 11 | **CCTV feeding system and GSM** |  | 2027-06-28 → 2027-07-04 (+6d) |  |  |
| CON-LEG101-LR-10030 | Installation of Short Range wireless point to point wireless bridge [Local – 08 ] |  | 2027-06-28 → 2026-09-24 A (-277d) | 90% → 100% | 30.4d → none |
| CON-LEG101-LR-9770 | Installation of Outdoor PTZ IP66 [Local – 08 ] |  | 2027-02-01 → 2026-09-24 A (-130d) | 90% → 100% | 140.1d → none |
| CON-LEG101-LR-9820 | Installation of LED Screen 43" (24/7 operation) with Ethernet decoders [Local – 08 ] | 2027-06-20 → 2027-06-27 (+7d) | 2027-06-27 → 2027-07-04 (+7d) |  | 30.4d → 23d |
| 12 | **Earthing System** | 2027-07-24 → 2027-07-27 (+3d) | 2027-07-26 → 2027-07-29 (+3d) |  |  |
| CON-LEG101-LR-8320 | Installation of Earthing for Distribution panels,SL feeder pillars, KWH, Unit substations and RMU [Local – 08 ] | 2027-07-24 → 2027-07-27 (+3d) | 2027-07-26 → 2027-07-29 (+3d) |  | 8.4d → 3.3d |
| 9 | **Road Lighting** |  | 2027-07-26 → 2027-07-29 (+3d) |  |  |
| CON-LEG101-LR-7490 | Installation of Unit Substation Including concrete foundations and fencing [Local – 08 ] |  | 2027-07-19 → 2027-07-22 (+3d) |  | 8.4d → 3.3d |
| CON-LEG101-LR-8470 | Installation of Street Lighting feeder pillars / Lighting panels [Local – 08 ] |  | 2027-07-24 → 2027-07-27 (+3d) |  | 8.4d → 3.3d |
| CON-LEG101-LR-7570 | Installation of Ring Main Unit RMU [Local – 08 ] | 2027-07-19 → 2027-07-22 (+3d) | 2027-07-24 → 2027-07-27 (+3d) |  | 8.4d → 3.3d |
| CON-LEG101-LR-8420 | Installation of Earthing for Streetlighting feeders for every end pole circuits. [Local – 08 ] | 2027-07-24 → 2027-07-27 (+3d) | 2027-07-26 → 2027-07-29 (+3d) |  | 23.9d → 20.9d |
| 3 | **Bridge** |  | 2027-08-31 → 2027-09-04 (+4d) |  |  |
| 3 | **Bridge Finishing** |  | 2027-08-31 → 2027-09-04 (+4d) |  |  |
| CON-LEG101-BR-1160 | Membrane waterproofing for concert in touch with soil and membrane waterproofing for bridge slab [Bridge ] | 2026-10-28 → 2026-11-04 (+7d) | 2026-11-08 → 2026-11-15 (+7d) |  | 105d → 128.5d |
| CON-LEG101-BR-1170 | Placing of Protective Coating for Concrete Surfaces [Bridge ] | 2026-11-09 → 2026-11-16 (+7d) | 2026-11-23 → 2026-11-30 (+7d) |  | 105d → 128.5d |
| CON-LEG101-BR-1260 | Asphalt Wearing Cource | 2026-11-24 → 2026-12-01 (+7d) | 2026-11-26 → 2026-12-03 (+7d) |  | 105d → 128.5d |
| CON-LEG101-BR-1190 | Installation of expansion joints for bridges [Bridge ] | 2026-11-28 → 2026-12-05 (+7d) | 2026-12-13 → 2026-12-20 (+7d) |  | 105d → 128.5d |
| CON-LEG101-BR-1200 | Installation of Guard Rail [Bridge ] | 2027-07-15 → 2027-07-19 (+4d) | 2027-08-08 → 2027-08-11 (+3d) |  | -69.5d → -43d |
| CON-LEG101-BR-1210 | Installation of GRP Panel [Bridge ] | 2027-08-08 → 2027-08-11 (+3d) | 2027-08-19 → 2027-08-23 (+4d) |  | -69.5d → -43d |
| CON-LEG101-BR-1220 | Installation of Logo MODON [Bridge ] | 2027-08-19 → 2027-08-23 (+4d) | 2027-08-31 → 2027-09-04 (+4d) |  | -69.5d → -43d |
| 4 | **Outside Boundary Area (Tie-in Lines)** |  | 2027-06-27 → 2027-07-04 (+7d) |  |  |
| 4 | **Sanitary Sewerage** |  | 2026-10-29 → 2026-11-05 (+7d) |  |  |
| 1 | **Manhole** |  | 2026-10-29 → 2026-11-05 (+7d) |  |  |
| CON-LEG101-OBA-1150 | Installation of Fiberglass Manholes [Outside Boundary Area ] |  | 2026-10-29 → 2026-11-05 (+7d) |  | 214.13d → 208.13d |
| 3 | **TSE Network** |  | 2027-06-27 → 2027-07-04 (+7d) |  |  |
| 1 | **Valves/Chamber** |  | 2027-06-27 → 2027-07-04 (+7d) |  |  |
| CON-LEG101-OBA-1070 | Installation of Butterfly valves (In Chamber) [Outside Boundary Area ] |  | 2027-06-27 → 2027-07-04 (+7d) |  | 17.18d → 11.18d |
| CON-LEG101-OBA-1500 | Installation of Valve Chamber [Outside Boundary Area ] |  | 2027-06-27 → 2027-07-04 (+7d) |  | 17.18d → 11.18d |
| 5 | **Public Water Utility Distribution** |  | 2026-10-31 → 2026-11-07 (+7d) |  |  |
| 3 | **Public Water Utility Distribution (0 - 900) m** |  | 2026-10-29 → 2026-11-05 (+7d) |  |  |
| 1 | **Valves/Chamber** |  | 2026-10-29 → 2026-11-05 (+7d) |  |  |
| CON-LEG101-OBA-1420 | Installation of Air Valve chambers [Outside Boundary Area ] 0 - 900 m |  | 2026-10-29 → 2026-11-05 (+7d) |  | 213.21d → 207.21d |
| CON-LEG101-OBA-1430 | Installation of Air Valves [Outside Boundary Area ] 0 - 900 m |  | 2026-10-29 → 2026-11-05 (+7d) |  | 213.21d → 207.21d |
| 1 | **Public Water Utility Distribution (901 - 1800) m** |  | 2026-10-31 → 2026-11-07 (+7d) |  |  |
| 1 | **Valves/Chamber** |  | 2026-10-31 → 2026-11-07 (+7d) |  |  |
| CON-LEG101-OBA-1440 | Installation of Air Valve chambers [Outside Boundary Area ] 901 - 1800 m |  | 2026-10-29 → 2026-11-05 (+7d) |  | 213.21d → 207.21d |
| CON-LEG101-OBA-1450 | Installation of Air Valves [Outside Boundary Area ] 901 - 1800 m |  | 2026-10-31 → 2026-11-07 (+7d) |  | 213.21d → 207.21d |
| CON-LEG101-OBA-1510 | Installation of Butterfly valves, on pipe with diameter 400 mm |  | 2026-10-31 → 2026-11-07 (+7d) |  | 213.21d → 207.21d |
| 8 | **Roads Finishing** |  | 2027-12-15 → 2027-12-22 (+7d) |  |  |
| 1 | **Local – 01** |  | 2027-11-14 → 2027-11-15 (+1d) |  |  |
| 1 | **LOCAL - 01 Segment-01 (From 0+000 to 1+066)** |  | 2027-10-04 → 2027-10-06 (+2d) |  |  |
| 1 | **Asphalt Wearing Course** |  | 2027-08-11 → 2027-08-10 (-1d) |  |  |
| CON-LEG101-LR-5980 | Tack coat (RC2) [Local – 01 Segment-01] |  | 2027-08-07 → 2027-08-08 (+1d) | 45% → 70% | -57.9d → -55.85d |
| CON-LEG101-LR-6080 | Bituminous wearing course [Local – 01 Segment-01] |  | 2027-08-11 → 2027-08-10 (-1d) | 45% → 70% | -57.9d → -55.85d |
| 5 | **Pavement Markings** | 2027-08-25 → 2027-08-28 (+3d) | 2027-09-13 → 2027-09-15 (+2d) |  |  |
| CON-LEG101-LR-6580 | Pavement Markings (White Paint/Yellow Paint) [Local – 01 Segment-01] | 2027-08-25 → 2027-08-28 (+3d) | 2027-09-01 → 2027-09-04 (+3d) |  | -70.3d → -71.25d |
| CON-LEG101-LR-6680 | Handicap ramp [Local – 01 Segment-01] | 2027-09-01 → 2027-09-04 (+3d) | 2027-09-13 → 2027-09-15 (+2d) |  | -65.3d → -66.25d |
| 6 | **Traffic Signs** |  | 2027-10-04 → 2027-10-06 (+2d) |  |  |
| CON-LEG101-LR-6780 | Installation of Traffic Signs [Local – 01 Segment-01] |  | 2027-10-04 → 2027-10-06 (+2d) |  | -45.15d → -45.05d |
| CON-LEG101-LR-6480 | Retroreflective Plastic Cones [Local – 01 Segment-01] | 2027-09-13 → 2027-09-15 (+2d) | 2027-09-25 → 2027-09-27 (+2d) |  | -64.3d → -65.25d |
| 2 | **LOCAL - 01 Segment-02 (From 1+066 to 2+133)** |  | 2027-10-21 → 2027-10-23 (+2d) |  |  |

| ID | Task | Start | Finish | Complete | Total float |
| --- | --- | --- | --- | --- | --- |
| 1 | **Asphalt Wearing Course** |  | 2027-08-15 → 2027-08-14 (-1d) |  |  |
| CON-LEG101-LR-5990 | Tack coat (RC2) [Local – 01 Segment-02] |  | 2027-08-14 → 2027-08-12 (-2d) |  | -50.15d → -47.05d |
| CON-LEG101-LR-6090 | Bituminous wearing course [Local – 01 Segment-02] |  | 2027-08-15 → 2027-08-14 (-1d) |  | -50.15d → -47.05d |
| 5 | **Pavement Markings** | 2027-09-01 → 2027-09-04 (+3d) | 2027-10-02 → 2027-10-04 (+2d) |  |  |
| CON-LEG101-LR-6590 | Pavement Markings (White Paint/Yellow Paint) [Local – 01 Segment-02] | 2027-09-01 → 2027-09-04 (+3d) | 2027-09-19 → 2027-09-21 (+2d) |  | -70.3d → -71.25d |
| CON-LEG101-LR-6690 | Handicap ramp [Local – 01 Segment-02] | 2027-09-19 → 2027-09-21 (+2d) | 2027-10-02 → 2027-10-04 (+2d) |  | -70.3d → -71.25d |
| 6 | **Traffic Signs** |  | 2027-10-21 → 2027-10-23 (+2d) |  |  |
| CON-LEG101-LR-6790 | Installation of Traffic Signs [Local – 01 Segment-02] |  | 2027-10-21 → 2027-10-23 (+2d) | 75% → 80% | -55.55d → -55.45d |
| CON-LEG101-LR-6490 | Retroreflective Plastic Cones [Local – 01 Segment-02] | 2027-10-02 → 2027-10-04 (+2d) | 2027-10-16 → 2027-10-18 (+2d) |  | -70.3d → -71.25d |
| 3 | **LOCAL - 01 Segment-03 (From 2+133 to 3+200)** |  | 2027-11-14 → 2027-11-15 (+1d) |  |  |
| 1 | **Asphalt Wearing Course** |  | 2027-08-18 → 2027-08-15 (-3d) |  |  |
| CON-LEG101-LR-6000 | Tack coat (RC2) [Local – 01 Segment-03] |  | 2027-08-17 → 2027-08-15 (-2d) | 70% → 90% | -50.15d → -47.05d |
| CON-LEG101-LR-6100 | Bituminous wearing course [Local – 01 Segment-03] |  | 2027-08-18 → 2027-08-15 (-3d) | 70% → 90% | -50.15d → -47.05d |
| 5 | **Pavement Markings** | 2027-09-19 → 2027-09-21 (+2d) | 2027-10-16 → 2027-10-18 (+2d) |  |  |
| CON-LEG101-LR-6600 | Pavement Markings (White Paint/Yellow Paint) [Local – 01 Segment-03] | 2027-09-19 → 2027-09-21 (+2d) | 2027-10-02 → 2027-10-04 (+2d) |  | -70.3d → -71.25d |
| CON-LEG101-LR-6700 | Handicap ramp [Local – 01 Segment-03] | 2027-10-02 → 2027-10-04 (+2d) | 2027-10-16 → 2027-10-18 (+2d) |  | -70.3d → -71.25d |
| 6 | **Traffic Signs** |  | 2027-11-14 → 2027-11-15 (+1d) |  |  |
| CON-LEG101-LR-6800 | Installation of Traffic Signs [Local – 01 Segment-03] |  | 2027-11-14 → 2027-11-15 (+1d) | 75% → 80% | -70.3d → -71.25d |
| CON-LEG101-LR-6500 | Retroreflective Plastic Cones [Local – 01 Segment-03] | 2027-10-16 → 2027-10-18 (+2d) | 2027-11-08 → 2027-11-10 (+2d) |  | -70.3d → -71.25d |
| 2 | **Local – 02** |  | 2027-11-11 → 2027-11-13 (+2d) |  |  |
| 1 | **Asphalt Wearing Course** |  | 2027-08-18 → 2026-10-31 (-291d) |  |  |
| CON-LEG101-LR-6010 | Tack coat (RC2) [Local – 02 ] |  | 2027-08-18 → 2026-10-31 A (-291d) | 90% → 100% | -50.15d → none |
| CON-LEG101-LR-6110 | Bituminous wearing course [Local – 02 ] |  | 2027-08-18 → 2026-10-31 A (-291d) | 90% → 100% | -50.15d → none |
| 4 | **Interlocking block sidewalk/footpath** |  | 2026-07-28 → 2027-08-22 (+390d) |  |  |
| CON-LEG101-LR-6310 | Interlocking block pavers for sidewalk/footpath [Local – 02 ] |  | 2026-07-28 A → 2027-08-22 (+390d) | 100% → 70% | none → 0.65d |
| 5 | **Pavement Markings** | 2027-10-02 → 2027-10-04 (+2d) | 2027-10-25 → 2027-10-27 (+2d) |  |  |
| CON-LEG101-LR-6610 | Pavement Markings (White Paint/Yellow Paint) [Local – 02 ] | 2027-10-02 → 2027-10-04 (+2d) | 2027-10-13 → 2027-10-16 (+3d) |  | -68.3d → -69.25d |
| CON-LEG101-LR-6710 | Handicap ramp [Local – 02 ] | 2027-10-13 → 2027-10-16 (+3d) | 2027-10-25 → 2027-10-27 (+2d) |  | -68.3d → -69.25d |
| 6 | **Traffic Signs** |  | 2027-11-11 → 2027-11-13 (+2d) |  |  |
| CON-LEG101-LR-6810 | Installation of Traffic Signs [Local – 02 ] |  | 2027-11-11 → 2027-11-13 (+2d) | 75% → 80% | -68.3d → -69.25d |
| CON-LEG101-LR-6510 | Retroreflective Plastic Cones [Local – 02 ] | 2027-10-25 → 2027-10-27 (+2d) | 2027-11-06 → 2027-11-08 (+2d) |  | -68.3d → -69.25d |
| 3 | **Local – 03** |  | 2027-10-17 → 2027-10-12 (-5d) |  |  |
| 7 | **Concrete Curb** |  | 2027-08-02 → 2026-10-29 (-277d) |  |  |
| CON-LEG101-LR-6220 | Installation of Precast Concrete Curb [Local – 03 ] |  | 2027-08-02 → 2026-10-29 A (-277d) | 75% → 100% | -117.55d → none |
| 1 | **Asphalt Wearing Course** | 2027-08-18 → 2027-08-15 (-3d) | 2027-08-24 → 2027-08-21 (-3d) |  |  |
| CON-LEG101-LR-6020 | Tack coat (RC2) [Local – 03 ] | 2027-08-18 → 2027-08-15 (-3d) | 2027-08-21 → 2027-08-17 (-4d) |  | -50.15d → -47.05d |
| CON-LEG101-LR-6120 | Bituminous wearing course [Local – 03 ] | 2027-08-21 → 2027-08-17 (-4d) | 2027-08-24 → 2027-08-21 (-3d) |  | -50.15d → -47.05d |
| 3 | **Interlocking block roads/on-street parking** | 2027-08-24 → 2026-10-27 (-301d) | 2027-09-18 → 2026-10-31 (-322d) |  |  |
| CON-LEG101-LR-6420 | Interlocking block pavers for roads/on-street parking [Local – 03 ] | 2027-08-24 → 2026-10-27 A (-301d) | 2027-09-18 → 2026-10-31 A (-322d) | 0% → 100% | -26.35d → none |
| 4 | **Interlocking block sidewalk/footpath** |  | 2027-09-22 → 2026-10-31 (-326d) |  |  |
| CON-LEG101-LR-6320 | Interlocking block pavers for sidewalk/footpath [Local – 03 ] |  | 2027-09-22 → 2026-10-31 A (-326d) | 80% → 100% | -26.35d → none |
| 5 | **Pavement Markings** | 2027-08-25 → 2027-08-28 (+3d) | 2027-09-18 → 2027-09-20 (+2d) |  |  |
| CON-LEG101-LR-6620 | Pavement Markings (White Paint/Yellow Paint) [Local – 03 ] | 2027-08-25 → 2027-08-28 (+3d) | 2027-09-06 → 2027-09-08 (+2d) |  | -46.05d → -42.05d |
| CON-LEG101-LR-6720 | Handicap ramp [Local – 03 ] | 2027-09-06 → 2027-09-08 (+2d) | 2027-09-18 → 2027-09-20 (+2d) |  | -46.05d → -42.05d |
| 6 | **Traffic Signs** |  | 2027-10-17 → 2027-10-12 (-5d) |  |  |
| CON-LEG101-LR-6820 | Installation of Traffic Signs [Local – 03 ] |  | 2027-10-17 → 2027-10-12 (-5d) | 30% → 60% | -46.05d → -42.05d |
| CON-LEG101-LR-6520 | Retroreflective Plastic Cones [Local – 03 ] | 2027-09-18 → 2027-09-20 (+2d) | 2027-09-30 → 2027-10-03 (+3d) |  | -46.05d → -42.05d |
| 4 | **Local – 04** | 2027-09-26 → 2027-10-03 (+7d) | 2027-12-15 → 2027-12-22 (+7d) |  |  |
| 7 | **Concrete Curb** | 2027-09-26 → 2027-10-03 (+7d) | 2027-10-19 → 2027-10-26 (+7d) |  |  |
| CON-LEG101-LR-6230 | Installation of Precast Concrete Curb [Local – 04 ] | 2027-09-26 → 2027-10-03 (+7d) | 2027-10-19 → 2027-10-26 (+7d) |  | -163d → -169d |
| 1 | **Asphalt Wearing Course** | 2027-10-20 → 2027-10-27 (+7d) | 2027-10-25 → 2027-11-01 (+7d) |  |  |
| CON-LEG101-LR-6030 | Tack coat (RC2) [Local – 04 ] | 2027-10-20 → 2027-10-27 (+7d) | 2027-10-21 → 2027-10-28 (+7d) |  | -97.4d → -103.4d |
| CON-LEG101-LR-6130 | Bituminous wearing course [Local – 04 ] | 2027-10-23 → 2027-10-30 (+7d) | 2027-10-25 → 2027-11-01 (+7d) |  | -97.4d → -103.4d |
| 3 | **Interlocking block roads/on-street parking** | 2027-10-26 → 2027-11-02 (+7d) | 2027-11-16 → 2027-11-23 (+7d) |  |  |
| CON-LEG101-LR-6430 | Interlocking block pavers for roads/on-street parking [Local – 04 ] | 2027-10-26 → 2027-11-02 (+7d) | 2027-11-16 → 2027-11-23 (+7d) |  | -91.4d → -97.4d |
| 4 | **Interlocking block sidewalk/footpath** | 2027-11-17 → 2027-11-24 (+7d) | 2027-12-08 → 2027-12-15 (+7d) |  |  |
| CON-LEG101-LR-6330 | Interlocking block pavers for sidewalk/footpath [Local – 04 ] | 2027-11-17 → 2027-11-24 (+7d) | 2027-12-08 → 2027-12-15 (+7d) |  | -91.4d → -97.4d |
| 5 | **Pavement Markings** | 2027-10-26 → 2027-11-02 (+7d) | 2027-11-17 → 2027-11-24 (+7d) |  |  |
| CON-LEG101-LR-6630 | Pavement Markings (White Paint/Yellow Paint) [Local – 04 ] | 2027-10-26 → 2027-11-02 (+7d) | 2027-11-06 → 2027-11-13 (+7d) |  | -97.4d → -103.4d |
| CON-LEG101-LR-6730 | Handicap ramp [Local – 04 ] | 2027-11-07 → 2027-11-14 (+7d) | 2027-11-17 → 2027-11-24 (+7d) |  | -97.4d → -103.4d |
| 6 | **Traffic Signs** | 2027-11-18 → 2027-11-25 (+7d) | 2027-12-15 → 2027-12-22 (+7d) |  |  |
| CON-LEG101-LR-6530 | Retroreflective Plastic Cones [Local – 04 ] | 2027-11-18 → 2027-11-25 (+7d) | 2027-11-29 → 2027-12-06 (+7d) |  | -97.4d → -103.4d |
| CON-LEG101-LR-6830 | Installation of Traffic Signs [Local – 04 ] | 2027-11-30 → 2027-12-07 (+7d) | 2027-12-15 → 2027-12-22 (+7d) |  | -97.4d → -103.4d |
| 5 | **Local – 05** |  | 2027-11-28 → 2027-12-05 (+7d) |  |  |
| 1 | **Asphalt Wearing Course** |  | 2027-10-26 → 2027-11-02 (+7d) |  |  |
| CON-LEG101-LR-6040 | Tack coat (RC2) [Local – 05 ] |  | 2027-10-26 → 2027-11-02 (+7d) |  | -83.4d → -87.9d |
| CON-LEG101-LR-6140 | Bituminous wearing course [Local – 05 ] |  | 2027-10-26 → 2027-11-02 (+7d) |  | -83.4d → -87.9d |
| 5 | **Pavement Markings** | 2027-10-26 → 2027-11-02 (+7d) | 2027-11-18 → 2027-11-25 (+7d) |  |  |
| CON-LEG101-LR-6640 | Pavement Markings (White Paint/Yellow Paint) [Local – 05 ] | 2027-10-26 → 2027-11-02 (+7d) | 2027-11-07 → 2027-11-14 (+7d) |  | -81.9d → -87.9d |
| CON-LEG101-LR-6740 | Handicap ramp [Local – 05 ] | 2027-11-07 → 2027-11-14 (+7d) | 2027-11-18 → 2027-11-25 (+7d) |  | -81.9d → -87.9d |

| ID | Task | Start | Finish | Complete | Total float |
| --- | --- | --- | --- | --- | --- |
| 6 | **Traffic Signs** |  | 2027-11-28 → 2027-12-05 (+7d) |  |  |
| CON-LEG101-LR-6840 | Installation of Traffic Signs [Local – 05 ] |  | 2027-11-28 → 2027-12-05 (+7d) |  | -81.9d → -87.9d |
| CON-LEG101-LR-6540 | Retroreflective Plastic Cones [Local – 05 ] | 2027-11-18 → 2027-11-25 (+7d) | 2027-11-24 → 2027-12-01 (+7d) |  | -81.9d → -87.9d |
| 6 | **Local – 06** |  | 2027-11-29 → 2027-12-05 (+6d) |  |  |
| 1 | **Asphalt Wearing Course** |  | 2027-10-28 → 2026-11-01 (-361d) |  |  |
| CON-LEG101-LR-6050 | Tack coat (RC2) [Local – 06 ] |  | 2027-10-27 → 2026-11-01 A (-360d) | 70% → 100% | -83.4d → none |
| CON-LEG101-LR-6150 | Bituminous wearing course [Local – 06 ] |  | 2027-10-28 → 2026-11-01 A (-361d) | 70% → 100% | -83.4d → none |
| 5 | **Pavement Markings** | 2027-10-28 → 2027-11-02 (+5d) | 2027-11-21 → 2027-11-25 (+4d) |  |  |
| CON-LEG101-LR-6650 | Pavement Markings (White Paint/Yellow Paint) [Local – 06 ] | 2027-10-28 → 2027-11-02 (+5d) | 2027-11-09 → 2027-11-14 (+5d) |  | -83.4d → -87.9d |
| CON-LEG101-LR-6750 | Handicap ramp [Local – 06 ] | 2027-11-09 → 2027-11-14 (+5d) | 2027-11-21 → 2027-11-25 (+4d) |  | -83.4d → -87.9d |
| 6 | **Traffic Signs** |  | 2027-11-29 → 2027-12-05 (+6d) |  |  |
| CON-LEG101-LR-6850 | Installation of Traffic Signs [Local – 06 ] |  | 2027-11-29 → 2027-12-05 (+6d) |  | -83.4d → -87.9d |
| CON-LEG101-LR-6550 | Retroreflective Plastic Cones [Local – 06 ] | 2027-11-21 → 2027-11-25 (+4d) | 2027-11-25 → 2027-11-30 (+5d) |  | -83.4d → -87.9d |
| 7 | **Local – 07** |  | 2027-11-08 → 2027-11-15 (+7d) |  |  |
| 1 | **Asphalt Wearing Course** |  | 2027-10-21 → 2027-10-28 (+7d) |  |  |
| CON-LEG101-LR-6060 | Tack coat (RC2) [Local – 07 ] |  | 2027-10-20 → 2027-10-27 (+7d) |  | -65.1d → -71.1d |
| CON-LEG101-LR-6160 | Bituminous wearing course [Local – 07 ] |  | 2027-10-21 → 2027-10-28 (+7d) |  | -65.1d → -71.1d |
| 5 | **Pavement Markings** | 2027-10-21 → 2027-10-28 (+7d) | 2027-10-31 → 2027-11-07 (+7d) |  |  |
| CON-LEG101-LR-6660 | Pavement Markings (White Paint/Yellow Paint) [Local – 07 ] | 2027-10-21 → 2027-10-28 (+7d) | 2027-10-26 → 2027-11-02 (+7d) |  | -65.1d → -71.1d |
| CON-LEG101-LR-6760 | Handicap ramp [Local – 07 ] | 2027-10-26 → 2027-11-02 (+7d) | 2027-10-31 → 2027-11-07 (+7d) |  | -65.1d → -71.1d |
| 6 | **Traffic Signs** |  | 2027-11-08 → 2027-11-15 (+7d) |  |  |
| CON-LEG101-LR-6860 | Installation of Traffic Signs [Local – 07 ] |  | 2027-11-08 → 2027-11-15 (+7d) |  | -65.1d → -71.1d |
| CON-LEG101-LR-6560 | Retroreflective Plastic Cones [Local – 07 ] | 2027-10-31 → 2027-11-07 (+7d) | 2027-11-04 → 2027-11-11 (+7d) |  | -65.1d → -71.1d |
| 8 | **Local – 08** |  | 2027-11-07 → 2027-11-16 (+9d) |  |  |
| 7 | **Concrete Curb** |  | 2026-09-03 → 2027-10-30 (+422d) |  |  |
| CON-LEG101-LR-6270 | Installation of Precast Concrete Curb [Local – 08 ] |  | 2026-09-03 A → 2027-10-30 (+422d) | 100% → 80% | none → -72d |
| 4 | **Interlocking block sidewalk/footpath** |  | 2026-09-17 → 2027-11-07 (+416d) |  |  |
| CON-LEG101-LR-6370 | Interlocking block pavers for sidewalk/footpath [Local – 08 ] |  | 2026-09-17 A → 2027-11-07 (+416d) | 100% → 70% | none → -63.5d |
| 5 | **Pavement Markings** | 2027-10-20 → 2027-10-30 (+10d) | 2027-10-28 → 2027-11-08 (+11d) |  |  |
| CON-LEG101-LR-6670 | Pavement Markings (White Paint/Yellow Paint) [Local – 08 ] | 2027-10-20 → 2027-10-30 (+10d) | 2027-10-24 → 2027-11-03 (+10d) |  | -63.9d → -72d |
| CON-LEG101-LR-6770 | Handicap ramp [Local – 08 ] | 2027-10-25 → 2027-11-03 (+9d) | 2027-10-28 → 2027-11-08 (+11d) |  | -63.9d → -72d |
| 6 | **Traffic Signs** |  | 2027-11-07 → 2027-11-16 (+9d) |  |  |
| CON-LEG101-LR-6870 | Installation of Traffic Signs [Local – 08 ] |  | 2027-11-07 → 2027-11-16 (+9d) | 75% → 80% | -63.9d → -72d |
| CON-LEG101-LR-6570 | Retroreflective Plastic Cones [Local – 08 ] | 2027-10-30 → 2027-11-08 (+9d) | 2027-11-02 → 2027-11-13 (+11d) |  | -63.9d → -72d |
| 5 | **Fence and Gate** |  | 2027-12-07 → 2027-12-11 (+4d) |  |  |
| 1 | **Fence and Gate Segment -01 (From 0+000 to 0+671)** |  | 2027-02-27 → 2027-03-06 (+7d) |  |  |
| 1 | **Fence** |  | 2027-02-27 → 2027-03-06 (+7d) |  |  |
| CON-LEG101-FG-1000 | Excavation for Fences [Fence and Gate Segment -01] |  | 2026-11-01 → 2026-11-08 (+7d) |  | 17.68d → 11.68d |
| CON-LEG101-FG-1100 | Lean concrete for Foundation [Fence and Gate Segment -01] |  | 2026-11-05 → 2026-11-12 (+7d) |  | 17.68d → 11.68d |
| CON-LEG101-FG-1150 | Reinforced concrete Structure [Fence and Gate Segment -01] |  | 2026-11-26 → 2026-12-03 (+7d) |  | 17.68d → 11.68d |
| CON-LEG101-FG-1200 | Spraying of bituminous paint waterproofing for R.C foundation [Fence and Gate Segment -01] | 2026-11-26 → 2026-12-03 (+7d) | 2026-12-08 → 2026-12-15 (+7d) |  | 17.68d → 11.68d |
| CON-LEG101-FG-1260 | Embankments to the Fences [Fence and Gate Segment -01] | 2026-12-08 → 2026-12-15 (+7d) | 2026-12-17 → 2026-12-24 (+7d) |  | 17.68d → 11.68d |
| CON-LEG101-FG-1050 | Concrete Works for Ground Beam for Fences [Fence and Gate Segment -01] | 2026-12-17 → 2026-12-24 (+7d) | 2027-01-10 → 2027-01-17 (+7d) |  | 17.68d → 11.68d |
| CON-LEG101-FG-1420 | Plster Works for Fences [Fence and Gate Segment -01] | 2027-01-10 → 2027-01-17 (+7d) | 2027-01-24 → 2027-01-31 (+7d) |  | 17.68d → 11.68d |
| CON-LEG101-FG-1280 | Installation of Metal Fence [Fence and Gate Segment -01] | 2027-01-24 → 2027-01-31 (+7d) | 2027-02-14 → 2027-02-21 (+7d) |  | 17.68d → 11.68d |
| CON-LEG101-FG-1340 | Paint On Cement Plaster [Fence and Gate Segment -01] | 2027-02-14 → 2027-02-21 (+7d) | 2027-02-27 → 2027-03-06 (+7d) |  | 17.68d → 11.68d |
| 2 | **Fence and Gate Segment -02 (From 0+671 to 1+342)** |  | 2027-04-27 → 2027-05-04 (+7d) |  |  |
| 1 | **Fence** |  | 2027-04-27 → 2027-05-04 (+7d) |  |  |
| CON-LEG101-FG-1010 | Excavation for Fences [Fence and Gate Segment -02] |  | 2027-03-02 → 2027-03-09 (+7d) |  | 17.68d → 11.68d |
| CON-LEG101-FG-1110 | Lean concrete for Foundation [Fence and Gate Segment -02] |  | 2027-03-03 → 2027-03-10 (+7d) |  | 17.68d → 11.68d |
| CON-LEG101-FG-1160 | Reinforced concrete Structure [Fence and Gate Segment -02] |  | 2027-03-09 → 2027-03-16 (+7d) |  | 17.68d → 11.68d |
| CON-LEG101-FG-1210 | Spraying of bituminous paint waterproofing for R.C foundation [Fence and Gate Segment -02] |  | 2027-03-11 → 2027-03-18 (+7d) |  | 17.68d → 11.68d |
| CON-LEG101-FG-1330 | Embankments to the Fences [Fence and Gate Segment -02] |  | 2027-03-14 → 2027-03-21 (+7d) |  | 17.68d → 11.68d |
| CON-LEG101-FG-1060 | Concrete Works for Ground Beam for Fences [Fence and Gate Segment -02] |  | 2027-03-20 → 2027-03-27 (+7d) |  | 17.68d → 11.68d |
| CON-LEG101-FG-1290 | Installation of Metal Fence [Fence and Gate Segment -02] |  | 2027-04-13 → 2027-04-20 (+7d) |  | 17.68d → 11.68d |
| CON-LEG101-FG-1430 | Plster Works for Fences [Fence and Gate Segment -02] | 2027-03-20 → 2027-03-27 (+7d) | 2027-04-03 → 2027-04-10 (+7d) |  | 17.68d → 11.68d |
| CON-LEG101-FG-1350 | Paint On Cement Plaster [Fence and Gate Segment -02] | 2027-04-13 → 2027-04-20 (+7d) | 2027-04-27 → 2027-05-04 (+7d) |  | 17.68d → 11.68d |
| 3 | **Fence and Gate Segment -03 (From 1+342 to 2+014)** |  | 2027-06-26 → 2027-07-03 (+7d) |  |  |
| 1 | **Fence** |  | 2027-05-19 → 2027-05-26 (+7d) |  |  |
| CON-LEG101-FG-1300 | Installation of Metal Fence [Fence and Gate Segment -03] |  | 2027-05-05 → 2027-05-12 (+7d) |  | 17.68d → 11.68d |
| CON-LEG101-FG-1440 | Plster Works for Fences [Fence and Gate Segment -03] |  | 2027-05-05 → 2027-05-12 (+7d) |  | 17.68d → 11.68d |
| CON-LEG101-FG-1360 | Paint On Cement Plaster [Fence and Gate Segment -03] |  | 2027-05-19 → 2027-05-26 (+7d) |  | 50.48d → 44.48d |
| 2 | **Gate** | 2027-05-05 → 2027-05-12 (+7d) | 2027-06-26 → 2027-07-03 (+7d) |  |  |
| CON-LEG101-FG-1250 | Installation of Main Entrance Motorized Gate [Fence and Gate Segment -03] | 2027-05-05 → 2027-05-12 (+7d) | 2027-06-02 → 2027-06-09 (+7d) |  | 17.68d → 11.68d |
| CON-LEG101-FG-1270 | Installation of Pedestrain Gate [Fence and Gate Segment -03] | 2027-06-02 → 2027-06-09 (+7d) | 2027-06-26 → 2027-07-03 (+7d) |  | 17.68d → 11.68d |
| 4 | **Fence and Gate Segment -04 (From 2+014 to 2+685)** |  | 2027-09-01 → 2027-09-05 (+4d) |  |  |
| 1 | **Fence** |  | 2027-09-01 → 2027-09-05 (+4d) |  |  |
| CON-LEG101-FG-1370 | Paint On Cement Plaster [Fence and Gate Segment -04] |  | 2027-09-01 → 2027-09-05 (+4d) |  | -38.5d → -41.5d |
| CON-LEG101-FG-1450 | Plster Works for Fences [Fence and Gate Segment -04] |  | 2027-06-27 → 2027-07-04 (+7d) |  | 17.18d → 11.18d |
| 5 | **Fence and Gate Segment -05 (From 2+685 to 3+356)** | 2027-09-01 → 2027-09-05 (+4d) | 2027-12-07 → 2027-12-11 (+4d) |  |  |

| ID | Task | Start | Finish | Complete | Total float |
| --- | --- | --- | --- | --- | --- |
| 1 | **Fence** | 2027-09-01 → 2027-09-05 (+4d) | 2027-12-07 → 2027-12-11 (+4d) |  |  |
| CON-LEG101-FG-1040 | Excavation for Fences [Fence and Gate Segment -05] | 2027-09-01 → 2027-09-05 (+4d) | 2027-09-13 → 2027-09-16 (+3d) |  | -38.5d → -41.5d |
| CON-LEG101-FG-1140 | Lean concrete for Foundation [Fence and Gate Segment -05] | 2027-09-13 → 2027-09-16 (+3d) | 2027-09-18 → 2027-09-21 (+3d) |  | -38.5d → -41.5d |
| CON-LEG101-FG-1190 | Reinforced concrete Structure [Fence and Gate Segment -05] | 2027-09-18 → 2027-09-21 (+3d) | 2027-10-12 → 2027-10-16 (+4d) |  | -38.5d → -41.5d |
| CON-LEG101-FG-1240 | Spraying of bituminous paint waterproofing for R.C foundation [Fence and Gate Segment -05] | 2027-10-12 → 2027-10-16 (+4d) | 2027-10-24 → 2027-10-27 (+3d) |  | -38.5d → -41.5d |
| CON-LEG101-FG-1410 | Embankments to the Fences [Fence and Gate Segment -05] | 2027-10-24 → 2027-10-27 (+3d) | 2027-10-28 → 2027-11-01 (+4d) |  | -38.5d → -41.5d |
| CON-LEG101-FG-1090 | Concrete Works for Ground Beam for Fences [Fence and Gate Segment -05] | 2027-10-28 → 2027-11-01 (+4d) | 2027-11-15 → 2027-11-18 (+3d) |  | -38.5d → -41.5d |
| CON-LEG101-FG-1460 | Plster Works for Fences [Fence and Gate Segment -05] | 2027-11-15 → 2027-11-18 (+3d) | 2027-11-22 → 2027-11-25 (+3d) |  | -38.5d → -41.5d |
| CON-LEG101-FG-1320 | Installation of Metal Fence [Fence and Gate Segment -05] | 2027-11-22 → 2027-11-25 (+3d) | 2027-11-30 → 2027-12-04 (+4d) |  | -38.5d → -41.5d |
| CON-LEG101-FG-1380 | Paint On Cement Plaster [Fence and Gate Segment -05] | 2027-11-30 → 2027-12-04 (+4d) | 2027-12-07 → 2027-12-11 (+4d) |  | -38.5d → -41.5d |
| 2 | **Roundabout & Landscape** | 2027-08-03 → 2026-10-17 (-290d) | 2028-04-25 → 2028-05-02 (+7d) |  |  |
| 10 | **Local – 01** | 2027-08-03 → 2026-10-17 (-290d) | 2028-02-16 → 2028-01-13 (-34d) |  |  |
| 1 | **LOCAL - 01 Segment-01 (From 0+000 to 1+066)** | 2027-08-03 → 2026-10-17 (-290d) | 2028-01-16 → 2027-12-14 (-33d) |  |  |
| 3 | **Irrigation Works** | 2027-08-03 → 2026-10-17 (-290d) | 2027-11-30 → 2027-10-28 (-33d) |  |  |
| 1 | **Secondary Irrigation** | 2027-08-03 → 2026-10-17 (-290d) | 2027-11-30 → 2027-10-28 (-33d) |  |  |
| 1 | **Pipe Work** | 2027-08-03 → 2026-10-17 (-290d) | 2027-10-13 → 2027-09-09 (-34d) |  |  |
| CON-LEG101-LR-4940 | Sand bedding for Secondary Irrigation [Local – 01 Segment-01] | 2027-08-12 → 2026-10-17 A (-299d) | 2027-08-18 → 2027-08-14 (-4d) | 0% → 50% | -110.65d → -74.65d |
| CON-LEG101-LR-4870 | Excavation for Secondary Irrigation [Local – 01 Segment-01] | 2027-08-03 → 2026-10-18 A (-289d) | 2027-08-12 → 2027-08-10 (-2d) | 0% → 50% | -110.65d → -103.65d |
| CON-LEG101-LR-5010 | Installation of Pipe for Secondary Irrigation [Local – 01 Segment-01] | 2027-08-18 → 2026-10-19 A (-303d) | 2027-08-30 → 2027-08-19 (-11d) | 0% → 50% | -110.65d → -74.65d |
| CON-LEG101-LR-5080 | Sand Surround for Secondary Irrigation [Local – 01 Segment-01] | 2027-08-30 → 2026-10-20 A (-314d) | 2027-09-05 → 2027-08-22 (-14d) | 0% → 50% | -110.65d → -74.65d |
| CON-LEG101-LR-5150 | Installation of Micron Marker Magnetic Tape [Local – 01 Segment-01] | 2027-09-05 → 2026-10-21 A (-319d) | 2027-09-16 → 2027-08-28 (-19d) | 0% → 50% | -110.65d → -74.65d |
| CON-LEG101-LR-5210 | Backfilling to Subgrade Elevation [Local – 01 Segment-01] | 2027-09-16 → 2026-10-22 A (-329d) | 2027-09-22 → 2027-08-31 (-22d) | 0% → 50% | -110.65d → -74.65d |
| CON-LEG101-LR-5410 | Installation of tubing for risers connections from laterals [Local – 01 Segment-01] | 2027-09-22 → 2026-10-24 A (-333d) | 2027-10-13 → 2027-09-09 (-34d) | 0% → 50% | -110.65d → -74.65d |
| 2 | **Valves and Controller** | 2027-10-13 → 2027-09-09 (-34d) | 2027-11-30 → 2027-10-28 (-33d) |  |  |
| CON-LEG101-LR-5270 | Installation of Electrical Solenoid Valve [Local – 01 Segment-01] | 2027-10-13 → 2027-09-09 (-34d) | 2027-10-19 → 2027-09-15 (-34d) |  | -102.65d → -74.65d |
| CON-LEG101-LR-5310 | Installation of quick coupler valve [Local – 01 Segment-01] | 2027-10-19 → 2027-09-15 (-34d) | 2027-10-25 → 2027-09-21 (-34d) |  | -102.65d → -74.65d |
| CON-LEG101-LR-5350 | Installation of a Flush valve [Local – 01 Segment-01] | 2027-10-25 → 2027-09-21 (-34d) | 2027-10-31 → 2027-09-28 (-33d) |  | -102.65d → -74.65d |
| CON-LEG101-LR-5470 | Installation of Advanced Irrigation controller [Local – 01 Segment-01] | 2027-10-31 → 2027-09-28 (-33d) | 2027-11-08 → 2027-10-06 (-33d) |  | -102.65d → -74.65d |
| CON-LEG101-LR-5480 | Install single station decoder for valve connection [Local – 01 Segment-01] | 2027-11-08 → 2027-10-06 (-33d) | 2027-11-16 → 2027-10-14 (-33d) |  | -102.65d → -74.65d |
| CON-LEG101-LR-5520 | Installation of Decoder cables 12 AWG between valves and controllers [Local – 01 Segment-01] | 2027-11-16 → 2027-10-14 (-33d) | 2027-11-30 → 2027-10-28 (-33d) |  | -102.65d → -74.65d |
| 14 | **Curbs and edging** | 2027-11-30 → 2027-10-28 (-33d) | 2027-12-02 → 2027-10-31 (-32d) |  |  |
| CON-LEG101-LR-4790 | Installation of Curbs and edging [Local – 01 Segment-01] | 2027-11-30 → 2027-10-28 (-33d) | 2027-12-02 → 2027-10-31 (-32d) |  | -102.65d → -74.65d |
| 13 | **Landscape** | 2027-12-02 → 2027-10-31 (-32d) | 2028-01-16 → 2027-12-14 (-33d) |  |  |
| CON-LEG101-LR-4580 | Site preparation for Planting Area [Local – 01 Segment-01] | 2027-12-02 → 2027-10-31 (-32d) | 2027-12-13 → 2027-11-10 (-33d) |  | -102.65d → -74.65d |
| CON-LEG101-LR-4650 | Placing Agricutural Soil [Local – 01 Segment-01] | 2027-12-13 → 2027-11-10 (-33d) | 2027-12-23 → 2027-11-21 (-32d) |  | -102.65d → -74.65d |
| CON-LEG101-LR-4720 | Planting Shrubs And Ground Cover [Local – 01 Segment-01] | 2027-12-23 → 2027-11-21 (-32d) | 2028-01-16 → 2027-12-14 (-33d) |  | -76.65d → -48.65d |
| 2 | **LOCAL - 01 Segment-02 (From 1+066 to 2+133)** | 2027-10-13 → 2026-10-17 (-361d) | 2028-02-15 → 2028-01-13 (-33d) |  |  |
| 2 | **Irrigation Works** | 2027-10-13 → 2026-10-17 (-361d) | 2028-01-12 → 2027-12-11 (-32d) |  |  |
| 1 | **Secondary Irrigation** | 2027-10-13 → 2026-10-17 (-361d) | 2028-01-12 → 2027-12-11 (-32d) |  |  |
| 1 | **Pipe Work** | 2027-10-13 → 2026-10-17 (-361d) | 2027-12-07 → 2027-10-09 (-59d) |  |  |
| CON-LEG101-LR-4880 | Excavation for Secondary Irrigation [Local – 01 Segment-02] | 2027-10-13 → 2026-10-17 A (-361d) | 2027-10-19 → 2027-09-13 (-36d) | 0% → 50% | -110.65d → -50.65d |
| CON-LEG101-LR-4950 | Sand bedding for Secondary Irrigation [Local – 01 Segment-02] | 2027-10-19 → 2026-10-18 A (-366d) | 2027-10-25 → 2027-09-15 (-40d) | 0% → 50% | -110.65d → -50.65d |
| CON-LEG101-LR-5020 | Installation of Pipe for Secondary Irrigation [Local – 01 Segment-02] | 2027-10-25 → 2026-10-19 A (-371d) | 2027-10-31 → 2027-09-19 (-42d) | 0% → 50% | -110.65d → -50.65d |
| CON-LEG101-LR-5090 | Sand Surround for Secondary Irrigation [Local – 01 Segment-02] | 2027-10-31 → 2026-10-20 A (-376d) | 2027-11-06 → 2027-09-21 (-46d) | 0% → 50% | -110.65d → -50.65d |
| CON-LEG101-LR-5160 | Installation of Micron Marker Magnetic Tape [Local – 01 Segment-02] | 2027-11-06 → 2026-10-21 A (-381d) | 2027-11-11 → 2027-09-26 (-46d) | 0% → 50% | -110.65d → -50.65d |
| CON-LEG101-LR-5220 | Backfilling to Subgrade Elevation [Local – 01 Segment-02] | 2027-11-11 → 2026-10-22 A (-385d) | 2027-11-17 → 2027-09-28 (-50d) | 0% → 50% | -110.65d → -50.65d |
| CON-LEG101-LR-5420 | Installation of tubing for risers connections from laterals [Local – 01 Segment-02] | 2027-11-17 → 2026-10-24 A (-389d) | 2027-12-07 → 2027-10-09 (-59d) | 0% → 50% | -110.65d → -50.65d |
| 2 | **Valves and Controller** | 2027-12-23 → 2027-11-21 (-32d) | 2028-01-12 → 2027-12-11 (-32d) |  |  |
| CON-LEG101-LR-5360 | Installation of a Flush valve [Local – 01 Segment-02] | 2027-12-23 → 2027-11-21 (-32d) | 2027-12-29 → 2027-11-27 (-32d) |  | -102.65d → -74.65d |
| CON-LEG101-LR-5530 | Installation of Decoder cables 12 AWG between valves and controllers [Local – 01 Segment-02] | 2027-12-29 → 2027-11-27 (-32d) | 2028-01-12 → 2027-12-11 (-32d) |  | -102.65d → -74.65d |
| 14 | **Curbs and edging** | 2028-01-12 → 2027-12-11 (-32d) | 2028-01-15 → 2027-12-13 (-33d) |  |  |
| CON-LEG101-LR-4800 | Installation of Curbs and edging [Local – 01 Segment-02] | 2028-01-12 → 2027-12-11 (-32d) | 2028-01-15 → 2027-12-13 (-33d) |  | -102.65d → -74.65d |
| 13 | **Landscape** | 2028-01-15 → 2027-12-13 (-33d) | 2028-02-15 → 2028-01-13 (-33d) |  |  |
| CON-LEG101-LR-4590 | Site preparation for Planting Area [Local – 01 Segment-02] | 2028-01-15 → 2027-12-13 (-33d) | 2028-01-25 → 2027-12-23 (-33d) |  | -102.65d → -74.65d |
| CON-LEG101-LR-4660 | Placing Agricutural Soil [Local – 01 Segment-02] | 2028-01-25 → 2027-12-23 (-33d) | 2028-02-05 → 2028-01-03 (-33d) |  | -102.65d → -74.65d |
| CON-LEG101-LR-4730 | Planting Shrubs And Ground Cover [Local – 01 Segment-02] | 2028-02-05 → 2028-01-03 (-33d) | 2028-02-15 → 2028-01-13 (-33d) |  | -102.65d → -74.65d |
| 3 | **LOCAL - 01 Segment-03 (From 2+133 to 3+200)** | 2027-12-07 → 2026-10-24 (-409d) | 2028-02-16 → 2027-12-09 (-69d) |  |  |
| 2 | **Irrigation Works** | 2027-12-07 → 2026-10-24 (-409d) | 2028-02-10 → 2027-11-10 (-92d) |  |  |
| 1 | **Secondary Irrigation** | 2027-12-07 → 2026-10-24 (-409d) | 2028-02-10 → 2027-11-10 (-92d) |  |  |
| 1 | **Pipe Work** | 2027-12-07 → 2026-10-24 (-409d) | 2028-02-10 → 2027-11-10 (-92d) |  |  |
| CON-LEG101-LR-4890 | Excavation for Secondary Irrigation [Local – 01 Segment-03] | 2027-12-07 → 2026-10-24 A (-409d) | 2027-12-13 → 2027-10-11 (-63d) | 0% → 50% | -110.65d → -50.65d |
| CON-LEG101-LR-4960 | Sand bedding for Secondary Irrigation [Local – 01 Segment-03] | 2027-12-13 → 2026-10-25 A (-414d) | 2027-12-19 → 2027-10-14 (-66d) | 0% → 50% | -103.65d → -44.65d |
| CON-LEG101-LR-5030 | Installation of Pipe for Secondary Irrigation [Local – 01 Segment-03] | 2027-12-19 → 2026-10-26 A (-419d) | 2027-12-25 → 2027-10-17 (-69d) | 0% → 50% | -103.65d → -44.65d |
| CON-LEG101-LR-5100 | Sand Surround for Secondary Irrigation [Local – 01 Segment-03] | 2027-12-25 → 2026-10-27 A (-424d) | 2028-01-03 → 2027-10-21 (-74d) | 0% → 50% | -98.65d → -19.15d |
| CON-LEG101-LR-5170 | Installation of Micron Marker Magnetic Tape [Local – 01 Segment-03] | 2028-01-03 → 2026-10-28 A (-432d) | 2028-01-12 → 2027-10-26 (-78d) | 0% → 50% | -98.65d → -19.15d |
| CON-LEG101-LR-5230 | Backfilling to Subgrade Elevation [Local – 01 Segment-03] | 2028-01-12 → 2026-10-29 A (-440d) | 2028-01-22 → 2027-10-31 (-83d) | 0% → 50% | -98.65d → -19.15d |
| CON-LEG101-LR-5430 | Installation of tubing for risers connections from laterals [Local – 01 Segment-03] | 2028-01-22 → 2026-10-31 A (-448d) | 2028-02-10 → 2027-11-10 (-92d) | 0% → 50% | -98.65d → -19.15d |
| 2 | **Valves and Controller** | 2027-12-25 → 2027-10-17 (-69d) | 2028-01-13 → 2027-11-06 (-68d) |  |  |
| CON-LEG101-LR-5370 | Installation of a Flush valve [Local – 01 Segment-03] | 2027-12-25 → 2027-10-17 (-69d) | 2027-12-30 → 2027-10-23 (-68d) |  | -103.65d → -44.65d |
| CON-LEG101-LR-5540 | Installation of Decoder cables 12 AWG between valves and controllers [Local – 01 Segment-03] | 2027-12-30 → 2027-10-23 (-68d) | 2028-01-13 → 2027-11-06 (-68d) |  | -103.65d → -44.65d |

| ID | Task | Start | Finish | Complete | Total float |
| --- | --- | --- | --- | --- | --- |
| 14 | **Curbs and edging** | 2028-01-13 → 2027-11-06 (-68d) | 2028-01-16 → 2027-11-08 (-69d) |  |  |
| CON-LEG101-LR-4810 | Installation of Curbs and edging [Local – 01 Segment-03] | 2028-01-13 → 2027-11-06 (-68d) | 2028-01-16 → 2027-11-08 (-69d) |  | -103.65d → -44.65d |
| 13 | **Landscape** | 2028-01-16 → 2027-11-08 (-69d) | 2028-02-16 → 2027-12-09 (-69d) |  |  |
| CON-LEG101-LR-4600 | Site preparation for Planting Area [Local – 01 Segment-03] | 2028-01-16 → 2027-11-08 (-69d) | 2028-01-26 → 2027-11-18 (-69d) |  | -103.65d → -44.65d |
| CON-LEG101-LR-4670 | Placing Agricutural Soil [Local – 01 Segment-03] | 2028-01-26 → 2027-11-18 (-69d) | 2028-02-06 → 2027-11-29 (-69d) |  | -103.65d → -44.65d |
| CON-LEG101-LR-4740 | Planting Shrubs And Ground Cover [Local – 01 Segment-03] | 2028-02-06 → 2027-11-29 (-69d) | 2028-02-16 → 2027-12-09 (-69d) |  | -103.65d → -44.65d |
| 3 | **Local – 02** | 2027-12-13 → 2026-10-24 (-415d) | 2028-02-24 → 2027-12-16 (-70d) |  |  |
| 3 | **Irrigation Works** | 2027-12-13 → 2026-10-24 (-415d) | 2028-02-13 → 2027-11-22 (-83d) |  |  |
| 1 | **Secondary Irrigation** | 2027-12-13 → 2026-10-24 (-415d) | 2028-02-13 → 2027-11-22 (-83d) |  |  |
| 1 | **Pipe Work** | 2027-12-13 → 2026-10-24 (-415d) | 2028-02-13 → 2027-11-11 (-94d) |  |  |
| CON-LEG101-LR-4900 | Excavation for Secondary Irrigation [Local – 02 ] | 2027-12-13 → 2026-10-24 A (-415d) | 2027-12-18 → 2027-10-13 (-66d) | 0% → 50% | -110.65d → -50.65d |
| CON-LEG101-LR-4970 | Sand bedding for Secondary Irrigation [Local – 02 ] | 2027-12-18 → 2026-10-25 A (-419d) | 2027-12-22 → 2027-10-16 (-67d) | 0% → 50% | -110.65d → -50.65d |
| CON-LEG101-LR-5040 | Installation of Pipe for Secondary Irrigation [Local – 02 ] | 2027-12-22 → 2026-10-26 A (-422d) | 2027-12-27 → 2027-10-18 (-70d) | 0% → 50% | -110.65d → -50.65d |
| CON-LEG101-LR-5110 | Sand Surround for Secondary Irrigation [Local – 02 ] | 2027-12-27 → 2026-10-27 A (-426d) | 2028-01-05 → 2027-10-23 (-74d) | 0% → 50% | -100.65d → -20.15d |
| CON-LEG101-LR-5180 | Installation of Micron Marker Magnetic Tape [Local – 02 ] | 2028-01-05 → 2026-10-28 A (-434d) | 2028-01-15 → 2027-10-27 (-80d) | 0% → 50% | -100.65d → -20.15d |
| CON-LEG101-LR-5240 | Backfilling to Subgrade Elevation [Local – 02 ] | 2028-01-15 → 2026-10-29 A (-443d) | 2028-01-26 → 2027-11-02 (-85d) | 0% → 50% | -100.65d → -20.15d |
| CON-LEG101-LR-5440 | Installation of tubing for risers connections from laterals [Local – 02 ] | 2028-01-26 → 2026-10-31 A (-452d) | 2028-02-13 → 2027-11-11 (-94d) | 0% → 50% | -100.65d → -20.15d |
| 2 | **Valves and Controller** | 2027-12-27 → 2027-10-18 (-70d) | 2028-01-31 → 2027-11-22 (-70d) |  |  |
| CON-LEG101-LR-5280 | Installation of Electrical Solenoid Valve [Local – 02 ] | 2027-12-27 → 2027-10-18 (-70d) | 2028-01-02 → 2027-10-24 (-70d) |  | -110.65d → -50.65d |
| CON-LEG101-LR-5320 | Installation of quick coupler valve [Local – 02 ] | 2028-01-02 → 2027-10-24 (-70d) | 2028-01-08 → 2027-10-30 (-70d) |  | -110.65d → -50.65d |
| CON-LEG101-LR-5380 | Installation of a Flush valve [Local – 02 ] | 2028-01-08 → 2027-10-30 (-70d) | 2028-01-12 → 2027-11-03 (-70d) |  | -110.65d → -50.65d |
| CON-LEG101-LR-5490 | Install single station decoder for valve connection [Local – 02 ] | 2028-01-12 → 2027-11-03 (-70d) | 2028-01-20 → 2027-11-11 (-70d) |  | -110.65d → -50.65d |
| CON-LEG101-LR-5550 | Installation of Decoder cables 12 AWG between valves and controllers [Local – 02 ] | 2028-01-20 → 2027-11-11 (-70d) | 2028-01-31 → 2027-11-22 (-70d) |  | -110.65d → -50.65d |
| 14 | **Curbs and edging** | 2028-01-31 → 2027-11-22 (-70d) | 2028-02-03 → 2027-11-25 (-70d) |  |  |
| CON-LEG101-LR-4830 | Installation of Curbs and edging [Local – 02 ] | 2028-01-31 → 2027-11-22 (-70d) | 2028-02-03 → 2027-11-25 (-70d) |  | -110.65d → -50.65d |
| 13 | **Landscape** | 2028-02-03 → 2027-11-25 (-70d) | 2028-02-24 → 2027-12-16 (-70d) |  |  |
| CON-LEG101-LR-4610 | Site preparation for Planting Area [Local – 02 ] | 2028-02-03 → 2027-11-25 (-70d) | 2028-02-10 → 2027-12-02 (-70d) |  | -110.65d → -50.65d |
| CON-LEG101-LR-4680 | Placing Agricutural Soil [Local – 02 ] | 2028-02-10 → 2027-12-02 (-70d) | 2028-02-17 → 2027-12-09 (-70d) |  | -110.65d → -50.65d |
| CON-LEG101-LR-4750 | Planting Shrubs And Ground Cover [Local – 02 ] | 2028-02-17 → 2027-12-09 (-70d) | 2028-02-24 → 2027-12-16 (-70d) |  | -110.65d → -50.65d |
| 5 | **Local – 04** | 2027-12-13 → 2027-10-27 (-47d) | 2028-02-15 → 2027-12-29 (-48d) |  |  |
| 2 | **Irrigation Works** | 2027-12-13 → 2027-10-27 (-47d) | 2028-02-01 → 2027-12-15 (-48d) |  |  |
| 1 | **Secondary Irrigation** | 2027-12-13 → 2027-10-27 (-47d) | 2028-02-01 → 2027-12-15 (-48d) |  |  |
| 1 | **Pipe Work** | 2027-12-13 → 2027-10-27 (-47d) | 2028-01-16 → 2027-11-29 (-48d) |  |  |
| CON-LEG101-LR-4910 | Excavation for Secondary Irrigation [Local – 04 ] | 2027-12-13 → 2027-10-27 (-47d) | 2027-12-16 → 2027-10-30 (-47d) |  | -103.65d → -62d |
| CON-LEG101-LR-4980 | Sand bedding for Secondary Irrigation [Local – 04 ] | 2027-12-16 → 2027-10-31 (-46d) | 2027-12-23 → 2027-11-06 (-47d) |  | -102.65d → -62d |
| CON-LEG101-LR-5050 | Installation of Pipe for Secondary Irrigation [Local – 04 ] | 2027-12-23 → 2027-11-07 (-46d) | 2028-01-02 → 2027-11-15 (-48d) |  | -102.65d → -62d |
| CON-LEG101-LR-5120 | Sand Surround for Secondary Irrigation [Local – 04 ] | 2028-01-02 → 2027-11-16 (-47d) | 2028-01-05 → 2027-11-18 (-48d) |  | -102.65d → -62d |
| CON-LEG101-LR-5190 | Installation of Micron Marker Magnetic Tape [Local – 04 ] | 2028-01-05 → 2027-11-20 (-46d) | 2028-01-11 → 2027-11-24 (-48d) |  | -102.65d → -62d |
| CON-LEG101-LR-5250 | Backfilling to Subgrade Elevation [Local – 04 ] | 2028-01-11 → 2027-11-25 (-47d) | 2028-01-13 → 2027-11-27 (-47d) |  | -102.65d → -62d |
| CON-LEG101-LR-5450 | Installation of tubing for risers connections from laterals [Local – 04 ] | 2028-01-13 → 2027-11-28 (-46d) | 2028-01-16 → 2027-11-29 (-48d) |  | -102.65d → -62d |
| 2 | **Valves and Controller** | 2028-01-02 → 2027-11-16 (-47d) | 2028-02-01 → 2027-12-15 (-48d) |  |  |
| CON-LEG101-LR-5290 | Installation of Electrical Solenoid Valve [Local – 04 ] | 2028-01-02 → 2027-11-16 (-47d) | 2028-01-09 → 2027-11-22 (-48d) |  | -102.65d → -62d |
| CON-LEG101-LR-5330 | Installation of quick coupler valve [Local – 04 ] | 2028-01-09 → 2027-11-23 (-47d) | 2028-01-16 → 2027-11-29 (-48d) |  | -102.65d → -62d |
| CON-LEG101-LR-5390 | Installation of a Flush valve [Local – 04 ] | 2028-01-16 → 2027-11-30 (-47d) | 2028-01-22 → 2027-12-05 (-48d) |  | -102.65d → -62d |
| CON-LEG101-LR-5500 | Install single station decoder for valve connection [Local – 04 ] | 2028-01-22 → 2027-12-06 (-47d) | 2028-01-30 → 2027-12-13 (-48d) |  | -102.65d → -62d |
| CON-LEG101-LR-5560 | Installation of Decoder cables 12 AWG between valves and controllers [Local – 04 ] | 2028-01-30 → 2027-12-14 (-47d) | 2028-02-01 → 2027-12-15 (-48d) |  | -102.65d → -62d |
| 14 | **Curbs and edging** | 2028-02-01 → 2027-12-16 (-47d) | 2028-02-05 → 2027-12-19 (-48d) |  |  |
| CON-LEG101-LR-4840 | Installation of Curbs and edging [Local – 04 ] | 2028-02-01 → 2027-12-16 (-47d) | 2028-02-05 → 2027-12-19 (-48d) |  | -102.65d → -62d |
| 13 | **Landscape** | 2028-02-05 → 2027-12-20 (-47d) | 2028-02-15 → 2027-12-29 (-48d) |  |  |
| CON-LEG101-LR-4620 | Site preparation for Planting Area [Local – 04 ] | 2028-02-05 → 2027-12-20 (-47d) | 2028-02-08 → 2027-12-22 (-48d) |  | -102.65d → -62d |
| CON-LEG101-LR-4690 | Placing Agricutural Soil [Local – 04 ] | 2028-02-08 → 2027-12-23 (-47d) | 2028-02-12 → 2027-12-26 (-48d) |  | -102.65d → -62d |
| CON-LEG101-LR-4760 | Planting Shrubs And Ground Cover [Local – 04 ] | 2028-02-12 → 2027-12-27 (-47d) | 2028-02-15 → 2027-12-29 (-48d) |  | -102.65d → -62d |
| 6 | **Local – 06** | 2027-12-13 → 2026-10-31 (-408d) | 2028-02-16 → 2027-12-23 (-55d) |  |  |
| 2 | **Irrigation Works** | 2027-12-13 → 2026-10-31 (-408d) | 2028-01-30 → 2027-12-06 (-55d) |  |  |
| 1 | **Secondary Irrigation** | 2027-12-13 → 2026-10-31 (-408d) | 2028-01-30 → 2027-12-06 (-55d) |  |  |
| 1 | **Pipe Work** | 2027-12-13 → 2026-10-31 (-408d) | 2028-01-02 → 2027-11-08 (-55d) |  |  |
| CON-LEG101-LR-4920 | Excavation for Secondary Irrigation [Local – 06 ] | 2027-12-13 → 2026-10-31 A (-408d) | 2027-12-16 → 2027-10-28 (-49d) | 0% → 40% | -103.65d → -56.2d |
| CON-LEG101-LR-5060 | Installation of Pipe for Secondary Irrigation [Local – 06 ] | 2027-12-16 → 2026-11-01 A (-410d) | 2027-12-20 → 2027-10-31 (-50d) | 0% → 40% | -103.65d → -56.2d |
| CON-LEG101-LR-5260 | Backfilling to Subgrade Elevation [Local – 06 ] | 2027-12-20 → 2026-11-02 A (-413d) | 2027-12-23 → 2027-11-02 (-51d) | 0% → 40% | -103.65d → -56.2d |
| CON-LEG101-LR-5460 | Installation of tubing for risers connections from laterals [Local – 06 ] | 2027-12-23 → 2026-11-02 A (-416d) | 2028-01-02 → 2027-11-08 (-55d) | 0% → 40% | -103.65d → -56.2d |
| 2 | **Valves and Controller** | 2028-01-02 → 2027-11-08 (-55d) | 2028-01-30 → 2027-12-06 (-55d) |  |  |
| CON-LEG101-LR-5300 | Installation of Electrical Solenoid Valve [Local – 06 ] | 2028-01-02 → 2027-11-08 (-55d) | 2028-01-06 → 2027-11-13 (-54d) |  | -103.65d → -56.2d |
| CON-LEG101-LR-5340 | Installation of quick coupler valve [Local – 06 ] | 2028-01-06 → 2027-11-13 (-54d) | 2028-01-11 → 2027-11-17 (-55d) |  | -103.65d → -56.2d |
| CON-LEG101-LR-5400 | Installation of a Flush valve [Local – 06 ] | 2028-01-11 → 2027-11-17 (-55d) | 2028-01-17 → 2027-11-23 (-55d) |  | -103.65d → -56.2d |
| CON-LEG101-LR-5510 | Install single station decoder for valve connection [Local – 06 ] | 2028-01-17 → 2027-11-23 (-55d) | 2028-01-23 → 2027-11-29 (-55d) |  | -103.65d → -56.2d |
| CON-LEG101-LR-5570 | Installation of Decoder cables 12 AWG between valves and controllers [Local – 06 ] | 2028-01-23 → 2027-11-29 (-55d) | 2028-01-30 → 2027-12-06 (-55d) |  | -103.65d → -56.2d |
| 14 | **Curbs and edging** | 2028-01-30 → 2027-12-06 (-55d) | 2028-02-02 → 2027-12-09 (-55d) |  |  |
| CON-LEG101-LR-4850 | Installation of Curbs and edging [Local – 06 ] | 2028-01-30 → 2027-12-06 (-55d) | 2028-02-02 → 2027-12-09 (-55d) |  | -103.65d → -56.2d |
| 13 | **Landscape** | 2028-02-02 → 2027-12-09 (-55d) | 2028-02-16 → 2027-12-23 (-55d) |  |  |
| CON-LEG101-LR-4630 | Site preparation for Planting Area [Local – 06 ] | 2028-02-02 → 2027-12-09 (-55d) | 2028-02-07 → 2027-12-14 (-55d) |  | -103.65d → -56.2d |

| ID | Task | Start | Finish | Complete | Total float |
| --- | --- | --- | --- | --- | --- |
| CON-LEG101-LR-4700 | Placing Agricutural Soil [Local – 06 ] | 2028-02-07 → 2027-12-14 (-55d) | 2028-02-12 → 2027-12-19 (-55d) |  | -103.65d → -56.2d |
| CON-LEG101-LR-4770 | Planting Shrubs And Ground Cover [Local – 06 ] | 2028-02-12 → 2027-12-19 (-55d) | 2028-02-16 → 2027-12-23 (-55d) |  | -103.65d → -56.2d |
| 1 | **Roundabout - 01 (L01 & L04)** | 2027-10-20 → 2027-10-27 (+7d) | 2028-04-15 → 2028-04-22 (+7d) |  |  |
| 1 | **Irrigation Works** | 2027-10-20 → 2027-10-27 (+7d) | 2028-02-08 → 2028-02-15 (+7d) |  |  |
| 1 | **Secondary Irrigation** | 2027-10-20 → 2027-10-27 (+7d) | 2028-02-08 → 2028-02-15 (+7d) |  |  |
| 1 | **Pipe Work** | 2027-10-20 → 2027-10-27 (+7d) | 2028-02-08 → 2028-02-15 (+7d) |  |  |
| CON-LEG101-RA-1120 | Excavation for Secondary Irrigation [Roundabout : 01 ] | 2027-10-20 → 2027-10-27 (+7d) | 2027-11-01 → 2027-11-08 (+7d) |  | -163d → -169d |
| CON-LEG101-RA-1150 | Sand bedding for Secondary Irrigation [Roundabout : 01 ] | 2027-11-02 → 2027-11-09 (+7d) | 2027-11-14 → 2027-11-21 (+7d) |  | -163d → -169d |
| CON-LEG101-RA-1180 | Installation of Pipe for Secondary Irrigation [Roundabout : 01 ] | 2027-11-15 → 2027-11-22 (+7d) | 2027-11-27 → 2027-12-04 (+7d) |  | -163d → -169d |
| CON-LEG101-RA-1210 | Sand Surround for Secondary Irrigation [Roundabout : 01 ] | 2027-11-28 → 2027-12-05 (+7d) | 2027-12-13 → 2027-12-20 (+7d) |  | -154d → -160d |
| CON-LEG101-RA-1240 | Installation of Micron Marker Magnetic Tape [Roundabout : 01 ] | 2027-12-14 → 2027-12-21 (+7d) | 2027-12-29 → 2028-01-05 (+7d) |  | -154d → -160d |
| CON-LEG101-RA-1270 | Backfilling to Subgrade Elevation [Roundabout : 01 ] | 2027-12-30 → 2028-01-06 (+7d) | 2028-01-15 → 2028-01-22 (+7d) |  | -154d → -160d |
| CON-LEG101-RA-1390 | Installation of tubing for risers connections from laterals [Roundabout : 01 ] | 2028-01-16 → 2028-01-23 (+7d) | 2028-02-08 → 2028-02-15 (+7d) |  | -154d → -160d |
| 2 | **Valves and Controller** | 2027-11-28 → 2027-12-05 (+7d) | 2028-01-23 → 2028-01-30 (+7d) |  |  |
| CON-LEG101-RA-1300 | Installation of Electrical Solenoid Valve [Roundabout : 01 ] | 2027-11-28 → 2027-12-05 (+7d) | 2027-12-02 → 2027-12-09 (+7d) |  | -163d → -169d |
| CON-LEG101-RA-1330 | Installation of quick coupler valve [Roundabout : 01 ] | 2027-12-04 → 2027-12-11 (+7d) | 2027-12-08 → 2027-12-15 (+7d) |  | -163d → -169d |
| CON-LEG101-RA-1360 | Installation of a Flush valve [Roundabout : 01 ] | 2027-12-09 → 2027-12-16 (+7d) | 2027-12-21 → 2027-12-28 (+7d) |  | -163d → -169d |
| CON-LEG101-RA-1420 | Install single station decoder for valve connection [Roundabout : 01 ] | 2027-12-22 → 2027-12-29 (+7d) | 2028-01-06 → 2028-01-13 (+7d) |  | -152d → -158d |
| A | Catch | 2028-01-08 → 2028-01-15 (+7d) | 2028-01-23 → 2028-01-30 (+7d) |  | -152d → -158d |
| 3 | **Curbs and edging** | 2028-01-24 → 2028-01-31 (+7d) | 2028-02-06 → 2028-02-13 (+7d) |  |  |
| CON-LEG101-RA-1090 | Installation of Curbs and edging [Roundabout : 01 ] | 2028-01-24 → 2028-01-31 (+7d) | 2028-02-06 → 2028-02-13 (+7d) |  | -152d → -158d |
| 2 | **Landscape** | 2028-02-09 → 2028-02-16 (+7d) | 2028-04-15 → 2028-04-22 (+7d) |  |  |
| CON-LEG101-RA-1000 | Site preparation for Planting Area [Roundabout : 01 ] | 2028-02-09 → 2028-02-16 (+7d) | 2028-03-01 → 2028-03-08 (+7d) |  | -154d → -160d |
| CON-LEG101-RA-1030 | Placing Agricutural Soil [Roundabout : 01 ] | 2028-03-02 → 2028-03-09 (+7d) | 2028-03-23 → 2028-03-30 (+7d) |  | -154d → -160d |
| CON-LEG101-RA-1060 | Planting Shrubs And Ground Cover [Roundabout : 01 ] | 2028-03-25 → 2028-04-01 (+7d) | 2028-04-15 → 2028-04-22 (+7d) |  | -154d → -160d |
| 4 | **Roundabout - 02 (L01 & L03)** | 2027-12-22 → 2027-12-29 (+7d) | 2028-04-25 → 2028-05-02 (+7d) |  |  |
| 1 | **Irrigation Works** | 2027-12-22 → 2027-12-29 (+7d) | 2028-04-11 → 2028-04-18 (+7d) |  |  |
| 1 | **Secondary Irrigation** | 2027-12-22 → 2027-12-29 (+7d) | 2028-04-11 → 2028-04-18 (+7d) |  |  |
| 1 | **Pipe Work** | 2027-12-22 → 2027-12-29 (+7d) | 2028-04-11 → 2028-04-18 (+7d) |  |  |
| CON-LEG101-RA-1130 | Excavation for Secondary Irrigation [Roundabout : 02 ] | 2027-12-22 → 2027-12-29 (+7d) | 2028-01-03 → 2028-01-10 (+7d) |  | -163d → -169d |
| CON-LEG101-RA-1160 | Sand bedding for Secondary Irrigation [Roundabout : 02 ] | 2028-01-04 → 2028-01-11 (+7d) | 2028-01-16 → 2028-01-23 (+7d) |  | -163d → -169d |
| CON-LEG101-RA-1190 | Installation of Pipe for Secondary Irrigation [Roundabout : 02 ] | 2028-01-17 → 2028-01-24 (+7d) | 2028-01-29 → 2028-02-05 (+7d) |  | -163d → -169d |
| CON-LEG101-RA-1220 | Sand Surround for Secondary Irrigation [Roundabout : 02 ] | 2028-01-30 → 2028-02-06 (+7d) | 2028-02-14 → 2028-02-21 (+7d) |  | -151d → -157d |
| CON-LEG101-RA-1250 | Installation of Micron Marker Magnetic Tape [Roundabout : 02 ] | 2028-02-15 → 2028-02-22 (+7d) | 2028-03-01 → 2028-03-08 (+7d) |  | -151d → -157d |
| CON-LEG101-RA-1280 | Backfilling to Subgrade Elevation [Roundabout : 02 ] | 2028-03-02 → 2028-03-09 (+7d) | 2028-03-18 → 2028-03-25 (+7d) |  | -151d → -157d |
| CON-LEG101-RA-1400 | Installation of tubing for risers connections from laterals [Roundabout : 02 ] | 2028-03-19 → 2028-03-26 (+7d) | 2028-04-11 → 2028-04-18 (+7d) |  | -151d → -157d |
| 2 | **Valves and Controller** | 2028-01-30 → 2028-02-06 (+7d) | 2028-03-18 → 2028-03-25 (+7d) |  |  |
| CON-LEG101-RA-1310 | Installation of Electrical Solenoid Valve [Roundabout : 02 ] | 2028-01-30 → 2028-02-06 (+7d) | 2028-02-03 → 2028-02-10 (+7d) |  | -163d → -169d |
| CON-LEG101-RA-1340 | Installation of quick coupler valve [Roundabout : 02 ] | 2028-02-05 → 2028-02-12 (+7d) | 2028-02-09 → 2028-02-16 (+7d) |  | -163d → -169d |
| CON-LEG101-RA-1370 | Installation of a Flush valve [Roundabout : 02 ] | 2028-02-10 → 2028-02-17 (+7d) | 2028-02-22 → 2028-02-29 (+7d) |  | -163d → -169d |
| CON-LEG101-RA-1430 | Install single station decoder for valve connection [Roundabout : 02 ] | 2028-02-23 → 2028-03-01 (+7d) | 2028-03-01 → 2028-03-08 (+7d) |  | -163d → -169d |
| CON-LEG101-RA-1460 | Installation of Decoder cables 12 AWG between valves and controllers [Roundabout : 02 ] | 2028-03-02 → 2028-03-09 (+7d) | 2028-03-18 → 2028-03-25 (+7d) |  | -163d → -169d |
| 3 | **Curbs and edging** | 2028-03-19 → 2028-03-26 (+7d) | 2028-03-21 → 2028-03-28 (+7d) |  |  |
| CON-LEG101-RA-1100 | Installation of Curbs and edging [Roundabout : 02 ] | 2028-03-19 → 2028-03-26 (+7d) | 2028-03-21 → 2028-03-28 (+7d) |  | -163d → -169d |
| 2 | **Landscape** | 2028-03-22 → 2028-03-29 (+7d) | 2028-04-25 → 2028-05-02 (+7d) |  |  |
| CON-LEG101-RA-1010 | Site preparation for Planting Area [Roundabout : 02 ] | 2028-03-22 → 2028-03-29 (+7d) | 2028-04-02 → 2028-04-09 (+7d) |  | -163d → -169d |
| CON-LEG101-RA-1040 | Placing Agricutural Soil [Roundabout : 02 ] | 2028-04-03 → 2028-04-10 (+7d) | 2028-04-13 → 2028-04-20 (+7d) |  | -163d → -169d |
| CON-LEG101-RA-1070 | Planting Shrubs And Ground Cover [Roundabout : 02 ] | 2028-04-15 → 2028-04-22 (+7d) | 2028-04-25 → 2028-05-02 (+7d) |  | -163d → -169d |
| 2 | **Roundabout - 03 (L03 & L05)** | 2028-01-04 → 2026-10-25 (-436d) | 2028-04-25 → 2028-04-13 (-12d) |  |  |
| 1 | **Irrigation Works** | 2028-01-04 → 2026-10-25 (-436d) | 2028-04-10 → 2028-03-18 (-23d) |  |  |
| 1 | **Secondary Irrigation** | 2028-01-04 → 2026-10-25 (-436d) | 2028-04-10 → 2028-03-18 (-23d) |  |  |
| 1 | **Pipe Work** | 2028-01-04 → 2026-10-25 (-436d) | 2028-04-10 → 2028-02-28 (-42d) |  |  |
| CON-LEG101-RA-1140 | Excavation for Secondary Irrigation [Roundabout : 03 ] | 2028-01-04 → 2026-10-25 A (-436d) | 2028-01-16 → 2028-01-17 (+1d) | 0% → 50% | -163d → -153d |
| CON-LEG101-RA-1170 | Sand bedding for Secondary Irrigation [Roundabout : 03 ] | 2028-01-17 → 2026-10-26 A (-448d) | 2028-01-27 → 2028-01-23 (-4d) | 0% → 50% | -163d → -153d |
| CON-LEG101-RA-1200 | Installation of Pipe for Secondary Irrigation [Roundabout : 03 ] | 2028-01-29 → 2026-10-27 A (-459d) | 2028-02-09 → 2028-01-29 (-11d) | 0% → 50% | -163d → -153d |
| CON-LEG101-RA-1230 | Sand Surround for Secondary Irrigation [Roundabout : 03 ] | 2028-02-10 → 2026-10-28 A (-470d) | 2028-02-22 → 2028-02-05 (-17d) | 0% → 50% | -150d → -114d |
| CON-LEG101-RA-1260 | Installation of Micron Marker Magnetic Tape [Roundabout : 03 ] | 2028-02-23 → 2026-10-29 A (-482d) | 2028-03-06 → 2028-02-10 (-25d) | 0% → 50% | -150d → -114d |
| CON-LEG101-RA-1290 | Backfilling to Subgrade Elevation [Roundabout : 03 ] | 2028-03-07 → 2026-10-31 A (-493d) | 2028-03-19 → 2028-02-17 (-31d) | 0% → 50% | -150d → -114d |
| CON-LEG101-RA-1410 | Installation of tubing for risers connections from laterals [Roundabout : 03 ] | 2028-03-20 → 2026-11-01 A (-505d) | 2028-04-10 → 2028-02-28 (-42d) | 0% → 50% | -150d → -114d |
| 2 | **Valves and Controller** | 2028-02-10 → 2028-01-30 (-11d) | 2028-03-29 → 2028-03-18 (-11d) |  |  |
| CON-LEG101-RA-1320 | Installation of Electrical Solenoid Valve [Roundabout : 03 ] | 2028-02-10 → 2028-01-30 (-11d) | 2028-02-15 → 2028-02-03 (-12d) |  | -163d → -153d |
| CON-LEG101-RA-1350 | Installation of quick coupler valve [Roundabout : 03 ] | 2028-02-16 → 2028-02-05 (-11d) | 2028-02-21 → 2028-02-09 (-12d) |  | -163d → -153d |
| CON-LEG101-RA-1380 | Installation of a Flush valve [Roundabout : 03 ] | 2028-02-22 → 2028-02-10 (-12d) | 2028-03-05 → 2028-02-22 (-12d) |  | -163d → -153d |
| CON-LEG101-RA-1440 | Install single station decoder for valve connection [Roundabout : 03 ] | 2028-03-06 → 2028-02-23 (-12d) | 2028-03-13 → 2028-03-01 (-12d) |  | -163d → -153d |
| CON-LEG101-RA-1470 | Installation of Decoder cables 12 AWG between valves and controllers [Roundabout : 03 ] | 2028-03-14 → 2028-03-02 (-12d) | 2028-03-29 → 2028-03-18 (-11d) |  | -163d → -153d |
| 3 | **Curbs and edging** | 2028-03-30 → 2028-03-19 (-11d) | 2028-04-02 → 2028-03-21 (-12d) |  |  |
| CON-LEG101-RA-1110 | Installation of Curbs and edging [Roundabout : 03 ] | 2028-03-30 → 2028-03-19 (-11d) | 2028-04-02 → 2028-03-21 (-12d) |  | -163d → -153d |
| 2 | **Landscape** | 2028-04-03 → 2028-03-22 (-12d) | 2028-04-25 → 2028-04-13 (-12d) |  |  |
| CON-LEG101-RA-1020 | Site preparation for Planting Area [Roundabout : 03 ] | 2028-04-03 → 2028-03-22 (-12d) | 2028-04-10 → 2028-03-29 (-12d) |  | -163d → -153d |
| CON-LEG101-RA-1050 | Placing Agricutural Soil [Roundabout : 03 ] | 2028-04-11 → 2028-03-30 (-12d) | 2028-04-17 → 2028-04-05 (-12d) |  | -163d → -153d |

| ID | Task | Start | Finish | Total float |
| --- | --- | --- | --- | --- |
| CON-LEG101-RA-1080 | Planting Shrubs And Ground Cover [Roundabout : 03 ] | 2028-04-18 → 2028-04-06 (-12d) | 2028-04-25 → 2028-04-13 (-12d) | -163d → -153d |
| 6 | **Testing & Commissioning** |  | 2028-05-03 → 2028-05-10 (+7d) |  |
| CON-LEG101-TC-1020 | Test for Public Water Utility Distribution |  | 2027-12-20 → 2027-12-27 (+7d) | -89d → -95d |
| CON-LEG101-TC-1030 | Test for TSE Network |  | 2028-01-03 → 2028-01-10 (+7d) | -80.4d → -86.4d |
| CON-LEG101-TC-1040 | Test for Sanitary Sewerage |  | 2027-12-21 → 2027-12-28 (+7d) | -85.4d → -91.4d |
| CON-LEG101-TC-1050 | Test for Stormwater Utilities |  | 2027-12-23 → 2027-12-30 (+7d) | -85.4d → -91.4d |
| CON-LEG101-TC-1060 | Test for Bridge Work |  | 2027-12-27 → 2028-01-03 (+7d) | -80.4d → -86.4d |
| CON-LEG101-TC-1080 | Test for Fence & Gate |  | 2027-12-09 → 2027-12-13 (+4d) | -38.5d → -41.5d |
| CON-LEG101-TC-1000 | Test for Telecommunications Work |  | 2028-01-12 → 2028-01-19 (+7d) | -76.2d → -82.2d |
| CON-LEG101-TC-1010 | Test for Electrical Network |  | 2028-01-01 → 2028-01-08 (+7d) | -80.4d → -86.4d |
| CON-LEG101-TC-1070 | Test for CCTV feeding system and GSM |  | 2028-01-16 → 2028-01-23 (+7d) | -74d → -80d |
| CON-LEG101-TC-1100 | Test for Road Lighting |  | 2028-01-06 → 2028-01-13 (+7d) | -76.2d → -82.2d |
| CON-LEG101-TC-1110 | Test for Road Works |  | 2027-12-19 → 2027-12-26 (+7d) | -97.4d → -103.4d |
| CON-LEG101-TC-1120 | Test for Earthing System |  | 2028-01-20 → 2028-01-27 (+7d) | -74d → -80d |
| CON-LEG101-TC-1090 | Test for Irrigation and Landscape | 2028-04-26 → 2028-05-03 (+7d) | 2028-05-03 → 2028-05-10 (+7d) | -163d → -169d |
| 7 | **Project Close-out** | 2027-12-09 → 2027-12-13 (+4d) | 2028-05-27 → 2028-06-03 (+7d) |  |
| 1 | **As-Built DWGs** | 2027-12-09 → 2027-12-13 (+4d) | 2028-05-15 → 2028-05-22 (+7d) |  |
| 1 | **As-Built DWGs Submittal** | 2027-12-09 → 2027-12-13 (+4d) | 2028-05-09 → 2028-05-16 (+7d) |  |
| CON-LEG101-ABS-1080 | As-Built DWGs Submittal for Fence & Gate | 2027-12-09 → 2027-12-13 (+4d) | 2027-12-16 → 2027-12-20 (+4d) | -38.5d → -41.5d |
| CON-LEG101-ABS-1110 | As-Built DWGs Submittal for Road Works | 2027-12-19 → 2027-12-26 (+7d) | 2028-01-02 → 2028-01-09 (+7d) | -97.4d → -103.4d |
| CON-LEG101-ABS-1020 | As-Built DWGs Submittal for Public Water Utility Distribution | 2027-12-21 → 2027-12-28 (+7d) | 2028-01-03 → 2028-01-10 (+7d) | -89d → -95d |
| CON-LEG101-ABS-1050 | As-Built DWGs Submittal for Stormwater Utilities | 2027-12-23 → 2027-12-30 (+7d) | 2028-01-06 → 2028-01-13 (+7d) | -85.4d → -91.4d |
| CON-LEG101-ABS-1060 | As-Built DWGs Submittal for Bridge Work | 2027-12-27 → 2028-01-03 (+7d) | 2028-01-10 → 2028-01-17 (+7d) | -74.2d → -80.2d |
| CON-LEG101-ABS-1030 | As-Built DWGs Submittal for TSE Network | 2028-01-03 → 2028-01-10 (+7d) | 2028-01-17 → 2028-01-24 (+7d) | -80.4d → -86.4d |
| CON-LEG101-ABS-1040 | As-Built DWGs Submittal for Sanitary Sewerage | 2028-01-06 → 2028-01-13 (+7d) | 2028-01-20 → 2028-01-27 (+7d) | -85.4d → -91.4d |
| CON-LEG101-ABS-1100 | As-Built DWGs Submittal for Road Lighting | 2028-01-08 → 2028-01-15 (+7d) | 2028-01-20 → 2028-01-27 (+7d) | -74d → -80d |
| CON-LEG101-ABS-1000 | As-Built DWGs Submittal for Telecommunications Work | 2028-01-12 → 2028-01-19 (+7d) | 2028-01-26 → 2028-02-02 (+7d) | -76.2d → -82.2d |
| CON-LEG101-ABS-1070 | As-Built DWGs Submittal for CCTV feeding system and GSM | 2028-01-16 → 2028-01-23 (+7d) | 2028-01-25 → 2028-02-01 (+7d) | -72.8d → -78.8d |
| CON-LEG101-ABS-1010 | As-Built DWGs Submittal for Electrical Network | 2028-01-20 → 2028-01-27 (+7d) | 2028-02-03 → 2028-02-10 (+7d) | -85.4d → -91.4d |
| CON-LEG101-ABS-1120 | As-Built DWGs Submittal for Earthing System | 2028-01-22 → 2028-01-29 (+7d) | 2028-01-26 → 2028-02-02 (+7d) | -74d → -80d |
| CON-LEG101-ABS-1090 | As-Built DWGs Submittal for Irrigation and Landscape | 2028-05-04 → 2028-05-11 (+7d) | 2028-05-09 → 2028-05-16 (+7d) | -163d → -169d |
| 2 | **As-Built DWGs Approval** | 2027-12-16 → 2027-12-20 (+4d) | 2028-05-15 → 2028-05-22 (+7d) |  |
| CON-LEG101-ABA-1080 | As- Built DWGs Approval for Fence & Gate | 2027-12-16 → 2027-12-20 (+4d) | 2027-12-22 → 2027-12-26 (+4d) | -38.5d → -41.5d |
| CON-LEG101-ABA-1110 | As- Built DWGs Approval for Road Works | 2028-01-02 → 2028-01-09 (+7d) | 2028-01-13 → 2028-01-20 (+7d) | -97.4d → -103.4d |
| CON-LEG101-ABA-1020 | As- Built DWGs Approval for Public Water Utility Distribution | 2028-01-13 → 2028-01-20 (+7d) | 2028-01-25 → 2028-02-01 (+7d) | -97.4d → -103.4d |
| CON-LEG101-ABA-1030 | As- Built DWGs Approval for TSE Network | 2028-01-17 → 2028-01-24 (+7d) | 2028-01-29 → 2028-02-05 (+7d) | -80.4d → -86.4d |
| CON-LEG101-ABA-1100 | As- Built DWGs Approval for Road Lighting | 2028-01-22 → 2028-01-29 (+7d) | 2028-02-01 → 2028-02-08 (+7d) | -74d → -80d |
| CON-LEG101-ABA-1050 | As- Built DWGs Approval for Stormwater Utilities | 2028-01-25 → 2028-02-01 (+7d) | 2028-02-06 → 2028-02-13 (+7d) | -97.4d → -103.4d |
| CON-LEG101-ABA-1070 | As- Built DWGs Approval for CCTV feeding system and GSM | 2028-01-25 → 2028-02-01 (+7d) | 2028-01-31 → 2028-02-07 (+7d) | -72.8d → -78.8d |
| CON-LEG101-ABA-1000 | As- Built DWGs Approval for Telecommunications Work | 2028-01-26 → 2028-02-02 (+7d) | 2028-02-05 → 2028-02-12 (+7d) | -76.2d → -82.2d |
| CON-LEG101-ABA-1120 | As- Built DWGs Approval for Earthing System | 2028-01-27 → 2028-02-03 (+7d) | 2028-02-01 → 2028-02-08 (+7d) | -74d → -80d |
| CON-LEG101-ABA-1060 | As- Built DWGs Approval for Bridge Work | 2028-02-06 → 2028-02-13 (+7d) | 2028-02-17 → 2028-02-24 (+7d) | -97.4d → -103.4d |
| CON-LEG101-ABA-1010 | As- Built DWGs Approval for Electrical Network | 2028-02-17 → 2028-02-24 (+7d) | 2028-02-29 → 2028-03-07 (+7d) | -97.4d → -103.4d |
| CON-LEG101-ABA-1040 | As- Built DWGs Approval for Sanitary Sewerage | 2028-02-17 → 2028-02-24 (+7d) | 2028-02-29 → 2028-03-07 (+7d) | -97.4d → -103.4d |
| CON-LEG101-ABA-1090 | As- Built DWGs Approval for Irrigation and Landscape | 2028-05-10 → 2028-05-17 (+7d) | 2028-05-15 → 2028-05-22 (+7d) | -163d → -169d |
| 2 | **Demobilization** | 2028-05-16 → 2028-05-23 (+7d) | 2028-05-27 → 2028-06-03 (+7d) |  |
| CON-LEG101-DM-1000 | Demobilization of Manpower | 2028-05-16 → 2028-05-23 (+7d) | 2028-05-21 → 2028-05-28 (+7d) | -163d → -169d |
| CON-LEG101-DM-1010 | Removal of Equipment from Site | 2028-05-16 → 2028-05-23 (+7d) | 2028-05-21 → 2028-05-28 (+7d) | -163d → -169d |
| CON-LEG101-DM-1020 | Site Clean Up | 2028-05-16 → 2028-05-23 (+7d) | 2028-05-21 → 2028-05-28 (+7d) | -163d → -169d |
| CON-LEG101-DM-1030 | Removal of Site Offices and Structures | 2028-05-16 → 2028-05-23 (+7d) | 2028-05-21 → 2028-05-28 (+7d) | -163d → -169d |
| CON-LEG101-DM-1040 | Restoration of Ground Surfaces | 2028-05-22 → 2028-05-29 (+7d) | 2028-05-27 → 2028-06-03 (+7d) | -163d → -169d |

## Version 7 (data date 2026-11-10, saved 2026-11-10, file 02. JDH1-02-003 -ENJ-WPR-051-10-11-2026 Update Schedule.xer)

Last finish 2028-06-03 → 2028-05-09 (-25d). Complete tasks 1339 → 1363.

Changed:

| ID | Task | Start | Finish | Complete | Total float |
| --- | --- | --- | --- | --- | --- |
| 5 | **Milestones** |  | 2028-06-03 → 2028-05-09 (-25d) |  |  |
| 1 | **Key Milestones** |  | 2028-06-03 → 2028-05-09 (-25d) |  |  |
| CON-LEG101-MS-1000 | Project Completion Date | 2028-06-03 → 2028-05-09 (-25d) | 2028-06-03 → 2028-05-09 (-25d) |  | -169d → -147.5d |
| 2 | **Contractual Milestone** |  | 2028-06-03 → 2028-05-09 (-25d) |  |  |
| 4 | **Engineering** | 2026-11-21 → 2026-11-28 (+7d) | 2026-11-21 → 2026-11-28 (+7d) |  |  |
| CON-LEG101-MS-1060 | Finish Submission and Approval for Shop Drawings, Method of Statement, Prequalification and Materials | 2026-11-21 → 2026-11-28 (+7d) | 2026-11-21 → 2026-11-28 (+7d) |  | -67d → -45.5d |
| 1 | **Procurement** | 2026-11-15 → 2026-11-22 (+7d) | 2026-11-15 → 2026-11-22 (+7d) |  |  |
| CON-LEG101-MS-1100 | Finish PO for Short Lead Item & Long Lead Item | 2026-11-15 → 2026-11-22 (+7d) | 2026-11-15 → 2026-11-22 (+7d) |  | -61.2d → -39.7d |
| 5 | **Construction** | 2027-02-01 → 2027-02-08 (+7d) | 2028-06-03 → 2028-05-09 (-25d) |  |  |
| CON-LEG101-MS-1130 | Completion of Deep infrastructure network | 2027-02-01 → 2027-02-08 (+7d) | 2027-02-01 → 2027-02-08 (+7d) |  | 41.65d → 67.15d |
| CON-LEG101-MS-1120 | Completion of Roads & Meduim Voltage | 2027-07-03 → 2027-07-10 (+7d) | 2027-07-03 → 2027-07-10 (+7d) |  | -104d → -82.5d |
| CON-LEG101-MS-1140 | Completion of Shallow infrastructure network | 2027-10-17 → 2027-10-24 (+7d) | 2027-10-17 → 2027-10-24 (+7d) |  | -46.4d → -52.4d |
| CON-LEG101-MS-1150 | Completion all Works | 2028-06-03 → 2028-05-09 (-25d) | 2028-06-03 → 2028-05-09 (-25d) |  | -169d → -147.5d |
| 6 | **Monitoring and Control Milestone** | 2027-07-04 → 2027-07-11 (+7d) | 2028-05-02 → 2028-04-08 (-24d) |  |  |
| CON-LEG101-MS-1050 | Completion of Outside Boundary Area's Scope (Tie-in Lines) | 2027-07-04 → 2027-07-11 (+7d) | 2027-07-04 → 2027-07-11 (+7d) |  | 11.18d → 5.18d |
| CON-LEG101-MS-1020 | Completion of Bridge | 2027-09-04 → 2027-09-05 (+1d) | 2027-09-04 → 2027-09-05 (+1d) |  |  |
| CON-LEG101-MS-1040 | Completion of Fence and Gate | 2027-12-11 → 2027-12-12 (+1d) | 2027-12-11 → 2027-12-12 (+1d) |  | -41.5d → -43d |
| CON-LEG101-MS-1010 | Completion of Roads Finishing | 2027-12-22 → 2027-12-29 (+7d) | 2027-12-22 → 2027-12-29 (+7d) |  | -103.4d → -109.4d |
| CON-LEG101-MS-1030 | Completion of Roundabout & Landscape works | 2028-05-02 → 2028-04-08 (-24d) | 2028-05-02 → 2028-04-08 (-24d) |  | -169d → -147.5d |
| 3 | **Engineering** |  | 2026-11-21 → 2026-11-28 (+7d) |  |  |
| 2 | **Shop Drawings** |  | 2026-11-21 → 2026-11-28 (+7d) |  |  |
| 1 | **Shop Drawings Submittal** |  | 2026-11-14 → 2026-11-21 (+7d) |  |  |
| 2 | **Shop Drawings Submittal for Electrical Network** |  | 2026-11-14 → 2026-11-21 (+7d) |  |  |
| CON-LEG101-EN-1390 | Shop DWG Submittal for Medium Voltage Network | 2026-11-04 → 2026-11-11 (+7d) | 2026-11-14 → 2026-11-21 (+7d) |  | -67d → -45.5d |
| 2 | **Shop Drawings Approval** |  | 2026-11-21 → 2026-11-28 (+7d) |  |  |
| 2 | **Shop Drawings Approval for Electrical Network** |  | 2026-11-21 → 2026-11-28 (+7d) |  |  |
| CON-LEG101-EN-1660 | Shop DWG Approval for Medium Voltage Network | 2026-11-15 → 2026-11-22 (+7d) | 2026-11-21 → 2026-11-28 (+7d) |  | -67d → -45.5d |
| 4 | **Pre-qualification and Material** |  | 2026-11-09 → 2026-11-16 (+7d) |  |  |
| 4 | **Electrical Network** |  | 2026-11-09 → 2026-11-16 (+7d) |  |  |
| 13 | **Ring Main Unit** |  | 2026-11-09 → 2026-11-16 (+7d) |  |  |
| CON-LEG101-SB-1710 | Pre-qualification and Material Approval for Ring Main Unit |  | 2026-11-09 → 2026-11-16 (+7d) |  | -61.2d → -39.7d |
| 14 | **Street Lighting Sub-station** |  | 2026-11-09 → 2026-11-16 (+7d) |  |  |
| CON-LEG101-SB-1750 | Pre-qualification and Material Approval for Street Lighting Sub-station |  | 2026-11-09 → 2026-11-16 (+7d) |  | -56.2d → -34.7d |
| 4 | **Procurement** |  | 2027-08-28 → 2027-09-04 (+7d) |  |  |
| 2 | **Short Lead Item** |  | 2027-08-28 → 2027-09-04 (+7d) |  |  |
| 1 | **Road Works - Civil** |  | 2027-08-28 → 2027-09-04 (+7d) |  |  |
| 9 | **Pavement Markings** |  | 2027-08-28 → 2027-09-04 (+7d) |  |  |
| CON-LEG101-PR-1600 | Material Delivery for Pavement Markings | 2027-08-05 → 2027-08-12 (+7d) | 2027-08-23 → 2027-08-30 (+7d) |  | -75.65d → -77.25d |
| CON-LEG101-PR-2070 | Staging Time for Pavement Markings | 2027-08-23 → 2027-08-30 (+7d) | 2027-08-28 → 2027-09-04 (+7d) |  | -75.65d → -77.25d |
| 6 | **Bituminous Base & Wearing Course** |  | 2027-08-10 → 2027-08-15 (+5d) |  |  |
| CON-LEG101-PR-1530 | Material Delivery for Wearing Course |  | 2027-08-10 → 2027-08-15 (+5d) | 80% → 91% | -75.65d → -77.25d |
| 1 | **Long Lead Item** |  | 2027-06-26 → 2027-07-03 (+7d) |  |  |
| 10 | **Fence & Gates** |  | 2027-02-06 → 2027-02-17 (+11d) |  |  |
| 2 | **Gates** |  | 2027-02-06 → 2027-02-17 (+11d) |  |  |
| CON-LEG101-PR-2040 | Material Fabrication for Gates |  | 2027-01-07 → 2027-01-14 (+7d) |  | -19d → 2.5d |
| CON-LEG101-PR-2050 | Material Delivery for Gates | 2027-01-09 → 2027-01-16 (+7d) | 2027-01-25 → 2027-02-01 (+7d) |  | -19d → 2.5d |
| CON-LEG101-PR-2090 | Staging Time for Gates | 2027-01-26 → 2027-02-02 (+7d) | 2027-02-06 → 2027-02-17 (+11d) |  | -19d → 2.5d |
| 1 | **Electrical Network** |  | 2027-06-26 → 2027-07-03 (+7d) |  |  |
| 12 | **Cable Termination & Joints** |  | 2027-04-06 → 2027-04-13 (+7d) |  |  |
| CON-LEG101-PR-1240 | PO for Cable Termination & Joints |  | 2026-11-09 → 2026-11-16 (+7d) |  | -137d → -115.5d |
| CON-LEG101-PR-1270 | Material Fabrication for Cable Termination & Joints | 2026-11-10 → 2026-11-17 (+7d) | 2027-02-28 → 2027-03-07 (+7d) |  | -137d → -115.5d |
| CON-LEG101-PR-1300 | Material Delivery for Cable Termination & Joints | 2027-03-01 → 2027-03-08 (+7d) | 2027-03-17 → 2027-03-24 (+7d) |  | -137d → -115.5d |
| CON-LEG101-PR-1450 | Stagging Time for Cable Termination & Joints | 2027-03-27 → 2027-04-03 (+7d) | 2027-04-06 → 2027-04-13 (+7d) |  | -144d → -122.5d |
| 1 | **Medium Voltage Cable** |  | 2027-03-25 → 2027-04-01 (+7d) |  |  |
| CON-LEG101-PR-1000 | PO for Medium Voltage Cable |  | 2026-11-09 → 2026-11-16 (+7d) |  | -152d → -130.5d |
| CON-LEG101-PR-1080 | Material Fabrication for Medium Voltage Cable | 2026-11-30 → 2026-12-07 (+7d) | 2027-02-07 → 2027-02-18 (+11d) |  | -169d → -147.5d |
| CON-LEG101-PR-1160 | Material Delivery for Medium Voltage Cable | 2027-02-18 → 2027-02-27 (+9d) | 2027-03-08 → 2027-03-15 (+7d) |  | -169d → -147.5d |
| CON-LEG101-PR-1880 | Staging Time for Medium Voltage Cable | 2027-03-09 → 2027-03-16 (+7d) | 2027-03-25 → 2027-04-01 (+7d) |  | -169d → -147.5d |
| 4 | **Street Lighting Sub-station** |  | 2027-05-27 → 2027-06-03 (+7d) |  |  |
| CON-LEG101-PR-1090 | Material Fabrication for Street Lighting Sub-station | 2027-02-08 → 2027-02-20 (+12d) | 2027-04-24 → 2027-05-01 (+7d) |  | -105d → -83.5d |
| CON-LEG101-PR-1170 | Material Delivery for Street Lighting Sub-station | 2027-04-25 → 2027-05-02 (+7d) | 2027-05-11 → 2027-05-23 (+12d) |  | -105d → -83.5d |
| CON-LEG101-PR-1890 | Staging Time for Street Lighting Sub-station | 2027-05-12 → 2027-05-24 (+12d) | 2027-05-27 → 2027-06-03 (+7d) |  | -105d → -83.5d |
| 2 | **Ring Main Unit** | 2026-11-09 → 2026-11-16 (+7d) | 2027-06-26 → 2027-07-03 (+7d) |  |  |
| CON-LEG101-PR-2480 | PO for Ring Main Unit | 2026-11-09 → 2026-11-16 (+7d) | 2026-11-15 → 2026-11-22 (+7d) |  | -61.2d → -39.7d |
| CON-LEG101-PR-2490 | Material Fabrication for Ring Main Unit | 2027-01-27 → 2027-02-03 (+7d) | 2027-04-24 → 2027-05-01 (+7d) |  | -80d → -58.5d |
| CON-LEG101-PR-2500 | Material Delivery for Ring Main Unit | 2027-05-29 → 2027-06-05 (+7d) | 2027-06-14 → 2027-06-21 (+7d) |  | -105d → -83.5d |
| CON-LEG101-PR-2510 | Staging Time for Ring Main Unit | 2027-06-15 → 2027-06-22 (+7d) | 2027-06-26 → 2027-07-03 (+7d) |  | -105d → -83.5d |
| 6 | **Landscape Works** |  | 2027-06-14 → 2027-06-21 (+7d) |  |  |
| 8 | **Shrubs And Ground Cover** |  | 2027-06-14 → 2027-06-21 (+7d) |  |  |
| CON-LEG101-PR-3000 | Material Delivery for agricultural soil | 2027-02-08 → 2027-02-20 (+12d) | 2027-06-02 → 2027-06-09 (+7d) |  | 87d → 81d |

| ID | Task | Start | Finish | Complete | Total float |
| --- | --- | --- | --- | --- | --- |
| CON-LEG101-PR-3060 | Staging Time for agricultural soil | 2027-06-03 → 2027-06-10 (+7d) | 2027-06-14 → 2027-06-21 (+7d) |  | 87d → 81d |
| 4 | **Bridge Works** |  | 2027-04-06 → 2027-03-15 (-22d) |  |  |
| 1 | **Guard Rail** |  | 2027-03-08 → 2027-03-15 (+7d) |  |  |
| CON-LEG101-PR-2280 | Material Delivery for Guard Rail |  | 2026-11-08 → 2026-11-15 (+7d) |  | 139.75d → 142.25d |
| CON-LEG101-PR-2290 | Staging Time for Guard Rail | 2027-02-08 → 2027-02-20 (+12d) | 2027-03-08 → 2027-03-15 (+7d) |  | 61.5d → 64d |
| 2 | **GRP Panel** |  | 2027-04-06 → 2026-11-07 (-150d) |  |  |
| CON-LEG101-PR-2310 | Material Fabrication for GRP Panel |  | 2026-11-17 → 2026-11-04 A (-13d) | 80% → 100% | 151.5d → none |
| CON-LEG101-PR-2320 | Material Delivery for GRP Panel | 2027-03-09 → 2026-11-05 A (-124d) | 2027-03-25 → 2026-11-05 A (-140d) | 0% → 100% | 61.5d → none |
| CON-LEG101-PR-2330 | Staging Time for GRP Panel | 2027-03-27 → 2026-11-07 A (-140d) | 2027-04-06 → 2026-11-07 A (-150d) | 0% → 100% | 61.5d → none |
| 1 | **Construction** |  | 2028-05-02 → 2028-04-08 (-24d) |  |  |
| 1 | **Roads & Meduim Voltage** |  | 2027-07-03 → 2027-07-10 (+7d) |  |  |
| 1 | **Local – 01** |  | 2027-06-16 → 2027-06-23 (+7d) |  |  |
| 1 | **LOCAL - 01 Segment-01 (From 0+000 to 1+066)** |  | 2027-04-28 → 2027-05-05 (+7d) |  |  |
| 8 | **Electrical Works** |  | 2027-04-28 → 2027-05-05 (+7d) |  |  |
| CON-LEG101-LR-15000 | Approval of Subcontractor / Supplier / Consultant for Medium Voltage from SEC | 2026-11-04 → 2026-11-11 (+7d) | 2026-11-15 → 2026-11-22 (+7d) |  | -169d → -147.5d |
| CON-LEG101-LR-15010 | Approval Materials of Medium Voltage from SEC | 2026-11-16 → 2026-11-23 (+7d) | 2026-11-26 → 2026-12-03 (+7d) |  | -169d → -147.5d |
| CON-LEG101-LR-15030 | PO for Medium Voltage | 2026-11-28 → 2026-12-05 (+7d) | 2026-11-29 → 2026-12-06 (+7d) |  | -169d → -147.5d |
| CON-LEG101-LR-15020 | Testing Materials of Medium Voltage from SEC | 2027-02-08 → 2027-02-20 (+12d) | 2027-02-17 → 2027-02-25 (+8d) |  | -169d → -147.5d |
| 2 | **Medium Voltage** |  | 2027-04-28 → 2027-05-05 (+7d) |  |  |
| CON-LEG101-LR-6880 | Excavation for Medium Voltage trench [Local – 01 Segment-01] | 2027-03-27 → 2027-04-03 (+7d) | 2027-04-03 → 2027-04-10 (+7d) |  | -169d → -147.5d |
| CON-LEG101-LR-7060 | Installation of Medium Voltage Cables [Local – 01 Segment-01] | 2027-04-04 → 2027-04-11 (+7d) | 2027-04-11 → 2027-04-18 (+7d) |  | -90d → -68.5d |
| CON-LEG101-LR-7150 | Installation of Straight joints cables [Local – 01 Segment-01] | 2027-04-12 → 2027-04-19 (+7d) | 2027-04-13 → 2027-04-20 (+7d) |  | -90d → -68.5d |
| CON-LEG101-LR-7240 | Installation of Cable Termination for 13.8 kv 3Cx 500 mm², Al /XLPE/LLDPE [Local – 01 Segment-01] | 2027-04-14 → 2027-04-21 (+7d) | 2027-04-17 → 2027-04-24 (+7d) |  | -90d → -68.5d |
| CON-LEG101-LR-7330 | Installation of Medium Voltage Switchgears [Local – 01 Segment-01] | 2027-04-18 → 2027-04-25 (+7d) | 2027-04-25 → 2027-05-02 (+7d) |  | -90d → -68.5d |
| CON-LEG101-LR-7680 | Installation of Cable Termination [Local – 01 Segment-01] | 2027-04-26 → 2027-05-03 (+7d) | 2027-04-28 → 2027-05-05 (+7d) |  | -90d → -68.5d |
| 2 | **LOCAL - 01 Segment-02 (From 1+066 to 2+133)** |  | 2027-05-20 → 2027-05-27 (+7d) |  |  |
| 8 | **Electrical Works** |  | 2027-05-20 → 2027-05-27 (+7d) |  |  |
| 2 | **Medium Voltage** |  | 2027-05-20 → 2027-05-27 (+7d) |  |  |
| CON-LEG101-LR-6890 | Excavation for Medium Voltage trench [Local – 01 Segment-02] | 2027-04-04 → 2027-04-11 (+7d) | 2027-04-11 → 2027-04-18 (+7d) |  | -169d → -147.5d |
| CON-LEG101-LR-7070 | Installation of Medium Voltage Cables [Local – 01 Segment-02] | 2027-04-12 → 2027-04-19 (+7d) | 2027-04-19 → 2027-04-26 (+7d) |  | -87d → -65.5d |
| CON-LEG101-LR-7160 | Installation of Straight joints cables [Local – 01 Segment-02] | 2027-04-20 → 2027-04-27 (+7d) | 2027-04-25 → 2027-05-02 (+7d) |  | -87d → -65.5d |
| CON-LEG101-LR-7250 | Installation of Cable Termination for 13.8 kv 3Cx 500 mm², Al /XLPE/LLDPE [Local – 01 Segment-02] | 2027-04-29 → 2027-05-06 (+7d) | 2027-05-02 → 2027-05-09 (+7d) |  | -90d → -68.5d |
| CON-LEG101-LR-7340 | Installation of Medium Voltage Switchgears [Local – 01 Segment-02] | 2027-05-03 → 2027-05-10 (+7d) | 2027-05-10 → 2027-05-22 (+12d) |  | -90d → -68.5d |
| CON-LEG101-LR-7690 | Installation of Cable Termination [Local – 01 Segment-02] | 2027-05-11 → 2027-05-23 (+12d) | 2027-05-20 → 2027-05-27 (+7d) |  | -90d → -68.5d |
| 3 | **LOCAL - 01 Segment-03 (From 2+133 to 3+200)** |  | 2027-06-16 → 2027-06-23 (+7d) |  |  |
| 8 | **Electrical Works** |  | 2027-06-16 → 2027-06-23 (+7d) |  |  |
| 2 | **Medium Voltage** |  | 2027-06-16 → 2027-06-23 (+7d) |  |  |
| CON-LEG101-LR-6900 | Excavation for Medium Voltage trench [Local – 01 Segment-03] | 2027-05-22 → 2027-05-29 (+7d) | 2027-05-25 → 2027-06-01 (+7d) |  | -90d → -68.5d |
| CON-LEG101-LR-7080 | Installation of Medium Voltage Cables [Local – 01 Segment-03] | 2027-05-26 → 2027-06-02 (+7d) | 2027-06-02 → 2027-06-09 (+7d) |  | -90d → -68.5d |
| CON-LEG101-LR-7170 | Installation of Straight joints cables [Local – 01 Segment-03] | 2027-06-03 → 2027-06-10 (+7d) | 2027-06-05 → 2027-06-12 (+7d) |  | -90d → -68.5d |
| CON-LEG101-LR-7260 | Installation of Cable Termination for 13.8 kv 3Cx 500 mm², Al /XLPE/LLDPE [Local – 01 Segment-03] | 2027-06-06 → 2027-06-13 (+7d) | 2027-06-08 → 2027-06-15 (+7d) |  | -90d → -68.5d |
| CON-LEG101-LR-7350 | Installation of Medium Voltage Switchgears [Local – 01 Segment-03] | 2027-06-09 → 2027-06-16 (+7d) | 2027-06-13 → 2027-06-20 (+7d) |  | -90d → -68.5d |
| CON-LEG101-LR-7700 | Installation of Cable Termination [Local – 01 Segment-03] | 2027-06-14 → 2027-06-21 (+7d) | 2027-06-16 → 2027-06-23 (+7d) |  | -90d → -68.5d |
| 4 | **Local – 02** |  | 2027-06-05 → 2027-06-12 (+7d) |  |  |
| 8 | **Electrical Works** |  | 2027-06-05 → 2027-06-12 (+7d) |  |  |
| 2 | **Medium Voltage** |  | 2027-06-05 → 2027-06-12 (+7d) |  |  |
| CON-LEG101-LR-6910 | Excavation for Medium Voltage trench [Local – 02 ] | 2027-04-12 → 2027-04-19 (+7d) | 2027-04-20 → 2027-04-27 (+7d) |  | -169d → -147.5d |
| CON-LEG101-LR-7090 | Installation of Medium Voltage Cables [Local – 02 ] | 2027-04-21 → 2027-04-28 (+7d) | 2027-05-05 → 2027-05-12 (+7d) |  | -169d → -147.5d |
| CON-LEG101-LR-7180 | Installation of Straight joints cables [Local – 02 ] | 2027-05-06 → 2027-05-13 (+7d) | 2027-05-12 → 2027-05-24 (+12d) |  | -169d → -147.5d |
| CON-LEG101-LR-7270 | Installation of Cable Termination for 13.8 kv 3Cx 500 mm², Al /XLPE/LLDPE [Local – 02 ] | 2027-05-13 → 2027-05-25 (+12d) | 2027-05-26 → 2027-06-02 (+7d) |  | -169d → -147.5d |
| CON-LEG101-LR-7360 | Installation of Medium Voltage Switchgears [Local – 02 ] | 2027-05-27 → 2027-06-03 (+7d) | 2027-06-01 → 2027-06-08 (+7d) |  | -169d → -147.5d |
| CON-LEG101-LR-7710 | Installation of Cable Termination [Local – 02 ] | 2027-06-02 → 2027-06-09 (+7d) | 2027-06-05 → 2027-06-12 (+7d) |  | -169d → -147.5d |
| 2 | **Local – 03** |  | 2027-06-28 → 2027-07-05 (+7d) |  |  |
| 8 | **Electrical Works** |  | 2027-06-28 → 2027-07-05 (+7d) |  |  |
| 2 | **Medium Voltage** |  | 2027-06-28 → 2027-07-05 (+7d) |  |  |
| CON-LEG101-LR-6920 | Excavation for Medium Voltage trench [Local – 03 ] | 2027-06-06 → 2027-06-13 (+7d) | 2027-06-08 → 2027-06-15 (+7d) |  | -169d → -147.5d |
| CON-LEG101-LR-7100 | Installation of Medium Voltage Cables [Local – 03 ] | 2027-06-09 → 2027-06-16 (+7d) | 2027-06-14 → 2027-06-21 (+7d) |  | -100d → -78.5d |
| CON-LEG101-LR-7190 | Installation of Straight joints cables [Local – 03 ] | 2027-06-15 → 2027-06-22 (+7d) | 2027-06-16 → 2027-06-23 (+7d) |  | -100d → -78.5d |
| CON-LEG101-LR-7280 | Installation of Cable Termination for 13.8 kv 3Cx 500 mm², Al /XLPE/LLDPE [Local – 03 ] | 2027-06-17 → 2027-06-24 (+7d) | 2027-06-20 → 2027-06-27 (+7d) |  | -100d → -78.5d |
| CON-LEG101-LR-7370 | Installation of Medium Voltage Switchgears [Local – 03 ] | 2027-06-21 → 2027-06-28 (+7d) | 2027-06-24 → 2027-07-01 (+7d) |  | -100d → -78.5d |
| CON-LEG101-LR-7720 | Installation of Cable Termination [Local – 03 ] | 2027-06-26 → 2027-07-03 (+7d) | 2027-06-28 → 2027-07-05 (+7d) |  | -100d → -78.5d |
| 3 | **Local – 04** |  | 2027-07-03 → 2027-07-10 (+7d) |  |  |
| 7 | **Road Works** |  | 2027-01-31 → 2027-02-07 (+7d) |  |  |
| 1 | **Earthworks and Site Grading** |  | 2027-01-02 → 2027-01-09 (+7d) |  |  |
| CON-LEG101-LR-1800 | Excavation for Roadway [Local – 04 ] | 2026-11-22 → 2026-11-29 (+7d) | 2026-12-08 → 2026-12-15 (+7d) |  | -66.24d → -44.74d |
| CON-LEG101-LR-4420 | Embankments to the roads [Local – 04 ] | 2026-12-09 → 2026-12-16 (+7d) | 2027-01-02 → 2027-01-09 (+7d) |  | 19d → 40.5d |
| 2 | **Asphalt Work** | 2027-01-03 → 2027-01-10 (+7d) | 2027-01-31 → 2027-02-07 (+7d) |  |  |
| CON-LEG101-LR-5630 | Subgrade [Local – 04 ] | 2027-01-03 → 2027-01-10 (+7d) | 2027-01-16 → 2027-01-23 (+7d) |  | 19d → 40.5d |
| CON-LEG101-LR-5730 | Aggregate base course [Local – 04 ] | 2027-01-18 → 2027-01-25 (+7d) | 2027-01-26 → 2027-02-02 (+7d) |  | 18d → 39.5d |
| CON-LEG101-LR-5830 | Prime Coat (MC1) [Local – 04 ] | 2027-01-27 → 2027-02-03 (+7d) | 2027-01-28 → 2027-02-04 (+7d) |  | 18d → 39.5d |

| ID | Task | Start | Finish | Complete | Total float |
| --- | --- | --- | --- | --- | --- |
| CON-LEG101-LR-5930 | Bituminous Base Course [Local – 04 ] | 2027-01-30 → 2027-02-06 (+7d) | 2027-01-31 → 2027-02-07 (+7d) |  | 18d → 39.5d |
| 1 | **Electric Works** | 2027-06-06 → 2027-06-13 (+7d) | 2027-07-03 → 2027-07-10 (+7d) |  |  |
| 2 | **Medium Voltage** | 2027-06-06 → 2027-06-13 (+7d) | 2027-07-03 → 2027-07-10 (+7d) |  |  |
| CON-LEG101-LR-6930 | Excavation for Medium Voltage trench [Local – 04 ] | 2027-06-06 → 2027-06-13 (+7d) | 2027-06-09 → 2027-06-16 (+7d) |  | -169d → -147.5d |
| CON-LEG101-LR-7020 | Installation of Medium Voltage Cables Duct Banks [Local – 04 ] | 2027-06-10 → 2027-06-17 (+7d) | 2027-06-13 → 2027-06-20 (+7d) |  | -104d → -82.5d |
| CON-LEG101-LR-7110 | Installation of Medium Voltage Cables [Local – 04 ] | 2027-06-14 → 2027-06-21 (+7d) | 2027-06-20 → 2027-06-27 (+7d) |  | -104d → -82.5d |
| CON-LEG101-LR-7200 | Installation of Straight joints cables [Local – 04 ] | 2027-06-21 → 2027-06-28 (+7d) | 2027-06-23 → 2027-06-30 (+7d) |  | -104d → -82.5d |
| CON-LEG101-LR-7290 | Installation of Cable Termination for 13.8 kv 3Cx 500 mm², Al /XLPE/LLDPE [Local – 04 ] | 2027-06-24 → 2027-07-01 (+7d) | 2027-06-27 → 2027-07-04 (+7d) |  | -104d → -82.5d |
| CON-LEG101-LR-7380 | Installation of Medium Voltage Switchgears [Local – 04 ] | 2027-06-28 → 2027-07-05 (+7d) | 2027-06-29 → 2027-07-06 (+7d) |  | -104d → -82.5d |
| CON-LEG101-LR-7730 | Installation of Cable Termination [Local – 04 ] | 2027-06-30 → 2027-07-07 (+7d) | 2027-07-03 → 2027-07-10 (+7d) |  | -104d → -82.5d |
| 5 | **Local – 05** |  | 2027-06-27 → 2027-07-04 (+7d) |  |  |
| 8 | **Electrical Works** |  | 2027-06-27 → 2027-07-04 (+7d) |  |  |
| 2 | **Medium Voltage** |  | 2027-06-27 → 2027-07-04 (+7d) |  |  |
| CON-LEG101-LR-6940 | Excavation for Medium Voltage trench [Local – 05 ] | 2027-06-10 → 2027-06-17 (+7d) | 2027-06-14 → 2027-06-21 (+7d) |  | -99d → -77.5d |
| CON-LEG101-LR-7120 | Installation of Medium Voltage Cables [Local – 05 ] | 2027-06-15 → 2027-06-22 (+7d) | 2027-06-19 → 2027-06-26 (+7d) |  | -99d → -77.5d |
| CON-LEG101-LR-7210 | Installation of Straight joints cables [Local – 05 ] | 2027-06-20 → 2027-06-27 (+7d) | 2027-06-21 → 2027-06-28 (+7d) |  | -99d → -77.5d |
| CON-LEG101-LR-7300 | Installation of Cable Termination for 13.8 kv 3Cx 500 mm², Al /XLPE/LLDPE [Local – 05 ] | 2027-06-22 → 2027-06-29 (+7d) | 2027-06-23 → 2027-06-30 (+7d) |  | -99d → -77.5d |
| CON-LEG101-LR-7390 | Installation of Medium Voltage Switchgears [Local – 05 ] | 2027-06-24 → 2027-07-01 (+7d) | 2027-06-26 → 2027-07-03 (+7d) |  | -99d → -77.5d |
| CON-LEG101-LR-7740 | Installation of Cable Termination [Local – 05 ] | 2027-06-24 → 2027-07-01 (+7d) | 2027-06-27 → 2027-07-04 (+7d) |  | -99d → -77.5d |
| 6 | **Local – 06** |  | 2027-06-26 → 2027-07-03 (+7d) |  |  |
| 8 | **Electrical Works** |  | 2027-06-26 → 2027-07-03 (+7d) |  |  |
| 2 | **Medium Voltage** |  | 2027-06-26 → 2027-07-03 (+7d) |  |  |
| CON-LEG101-LR-6950 | Excavation for Medium Voltage trench [Local – 06 ] | 2027-06-12 → 2027-06-19 (+7d) | 2027-06-14 → 2027-06-21 (+7d) |  | -98d → -76.5d |
| CON-LEG101-LR-7130 | Installation of Medium Voltage Cables [Local – 06 ] | 2027-06-15 → 2027-06-22 (+7d) | 2027-06-17 → 2027-06-24 (+7d) |  | -98d → -76.5d |
| CON-LEG101-LR-7220 | Installation of Straight joints cables [Local – 06 ] | 2027-06-19 → 2027-06-26 (+7d) | 2027-06-20 → 2027-06-27 (+7d) |  | -98d → -76.5d |
| CON-LEG101-LR-7310 | Installation of Cable Termination for 13.8 kv 3Cx 500 mm², Al /XLPE/LLDPE [Local – 06 ] | 2027-06-21 → 2027-06-28 (+7d) | 2027-06-22 → 2027-06-29 (+7d) |  | -98d → -76.5d |
| CON-LEG101-LR-7400 | Installation of Medium Voltage Switchgears [Local – 06 ] | 2027-06-23 → 2027-06-30 (+7d) | 2027-06-24 → 2027-07-01 (+7d) |  | -98d → -76.5d |
| CON-LEG101-LR-7750 | Installation of Cable Termination [Local – 06 ] | 2027-06-23 → 2027-06-30 (+7d) | 2027-06-26 → 2027-07-03 (+7d) |  | -98d → -76.5d |
| 7 | **Local – 07** |  | 2027-06-24 → 2027-07-01 (+7d) |  |  |
| 7 | **Road Works** |  | 2026-12-09 → 2026-12-16 (+7d) |  |  |
| 1 | **Earthworks and Site Grading** |  | 2026-12-09 → 2026-12-16 (+7d) |  |  |
| CON-LEG101-LR-5070 | Embankments to the parcels for roads [Local – 07 ] |  | 2026-12-09 → 2026-12-16 (+7d) |  | 63.72d → 85.22d |
| 8 | **Electrical Works** |  | 2027-06-24 → 2027-07-01 (+7d) |  |  |
| 2 | **Medium Voltage** |  | 2027-06-24 → 2027-07-01 (+7d) |  |  |
| CON-LEG101-LR-6960 | Excavation for Medium Voltage trench [Local – 07 ] | 2027-06-12 → 2027-06-19 (+7d) | 2027-06-14 → 2027-06-21 (+7d) |  | -97d → -75.5d |
| CON-LEG101-LR-7140 | Installation of Medium Voltage Cables [Local – 07 ] | 2027-06-15 → 2027-06-22 (+7d) | 2027-06-17 → 2027-06-24 (+7d) |  | -97d → -75.5d |
| CON-LEG101-LR-7230 | Installation of Straight joints cables [Local – 07 ] | 2027-06-19 → 2027-06-26 (+7d) | 2027-06-20 → 2027-06-27 (+7d) |  | -97d → -75.5d |
| CON-LEG101-LR-7320 | Installation of Cable Termination for 13.8 kv 3Cx 500 mm², Al /XLPE/LLDPE [Local – 07 ] | 2027-06-21 → 2027-06-28 (+7d) | 2027-06-22 → 2027-06-29 (+7d) |  | -97d → -75.5d |
| CON-LEG101-LR-7410 | Installation of Medium Voltage Switchgears [Local – 07 ] | 2027-06-23 → 2027-06-30 (+7d) | 2027-06-24 → 2027-07-01 (+7d) |  | -97d → -75.5d |
| CON-LEG101-LR-7760 | Installation of Cable Termination [Local – 07 ] | 2027-06-23 → 2027-06-30 (+7d) | 2027-06-24 → 2027-07-01 (+7d) |  | -97d → -75.5d |
| 6 | **Deep Infrastructure network** |  | 2027-02-01 → 2027-02-08 (+7d) |  |  |
| 1 | **Local – 01** |  | 2026-11-25 → 2026-12-01 (+6d) |  |  |
| 1 | **LOCAL - 01 Segment-01 (From 0+000 to 1+066)** |  | 2026-11-24 → 2026-11-30 (+6d) |  |  |
| 1 | **Stormwater Utilities** |  | 2026-11-24 → 2026-11-30 (+6d) |  |  |
| 1 | **Manhole** |  | 2026-11-23 → 2026-11-29 (+6d) |  |  |
| CON-LEG101-LR-10920 | Finishing and Testing of Inlet Manholes [Local – 01 Segment-01] |  | 2026-11-23 → 2026-11-29 (+6d) | 90% → 95% | 77.5d → 99.75d |
| 3 | **Concrete Chambers/Outfalls** |  | 2026-11-24 → 2026-11-30 (+6d) |  |  |
| CON-LEG101-LR-10880 | FInishing and Testing of Concrete chambers [Local – 01 Segment-01] |  | 2026-11-24 → 2026-11-30 (+6d) | 90% → 95% | 85.3d → 112.6d |
| 4 | **Sanitary Sewerage** |  | 2026-11-22 → 2026-11-29 (+7d) |  |  |
| 1 | **Manhole** |  | 2026-11-22 → 2026-11-29 (+7d) |  |  |
| CON-LEG101-LR-3500 | Installation of Fiberglass Manholes [Local – 01 Segment-01] |  | 2026-11-22 → 2026-11-29 (+7d) |  | 27d → 48.5d |
| 2 | **LOCAL - 01 Segment-02 (From 1+066 to 2+133)** |  | 2026-11-24 → 2026-11-30 (+6d) |  |  |
| 1 | **Stormwater Utilities** |  | 2026-11-24 → 2026-11-30 (+6d) |  |  |
| 3 | **Concrete Chambers/Outfalls** |  | 2026-11-24 → 2026-11-30 (+6d) |  |  |
| CON-LEG101-LR-11030 | FInishing and Testing of Concrete chambers [Local – 01 Segment-02] |  | 2026-11-24 → 2026-11-30 (+6d) |  | 85.3d → 112.6d |
| 4 | **Sanitary Sewerage** |  | 2026-11-22 → 2026-11-29 (+7d) |  |  |
| 1 | **Manhole** |  | 2026-11-22 → 2026-11-29 (+7d) |  |  |
| CON-LEG101-LR-3510 | Installation of Fiberglass Manholes [Local – 01 Segment-02] |  | 2026-11-22 → 2026-11-29 (+7d) |  | 28.58d → 50.08d |
| 3 | **LOCAL - 01 Segment-03 (From 2+133 to 3+200)** |  | 2026-11-25 → 2026-12-01 (+6d) |  |  |
| 1 | **Stormwater Utilities** |  | 2026-11-25 → 2026-12-01 (+6d) |  |  |
| 1 | **Manhole** |  | 2026-11-22 → 2026-11-29 (+7d) |  |  |
| CON-LEG101-LR-11070 | Finishing and Testing of Inlet Manholes [Local – 01 Segment-03] |  | 2026-11-22 → 2026-11-29 (+7d) |  | 55.7d → 77.2d |
| 3 | **Concrete Chambers/Outfalls** |  | 2026-11-25 → 2026-12-01 (+6d) |  |  |
| CON-LEG101-LR-11130 | FInishing and Testing of Concrete chambers [Local – 01 Segment-03] |  | 2026-11-25 → 2026-12-01 (+6d) |  | 85.3d → 112.6d |
| 4 | **Sanitary Sewerage** |  | 2026-11-22 → 2026-11-29 (+7d) |  |  |
| 1 | **Manhole** |  | 2026-11-22 → 2026-11-29 (+7d) |  |  |
| CON-LEG101-LR-3520 | Installation of Fiberglass Manholes [Local – 01 Segment-03] |  | 2026-11-22 → 2026-11-29 (+7d) |  | 55d → 76.5d |
| 2 | **Local – 02** |  | 2026-11-25 → 2026-12-01 (+6d) |  |  |
| 1 | **Stormwater Utilities** |  | 2026-11-25 → 2026-12-01 (+6d) |  |  |
| 1 | **Manhole** |  | 2026-11-22 → 2026-11-29 (+7d) |  |  |

| ID | Task | Start | Finish | Complete | Total float |
| --- | --- | --- | --- | --- | --- |
| CON-LEG101-LR-11180 | Finishing and Testing of Inlet Manholes [Local – 02 ] |  | 2026-11-22 → 2026-11-29 (+7d) |  | 78.2d → 99.7d |
| 3 | **Concrete Chambers/Outfalls** |  | 2026-11-25 → 2026-12-01 (+6d) |  |  |
| CON-LEG101-LR-11230 | FInishing and Testing of Concrete chambers [Local – 02 ] |  | 2026-11-25 → 2026-12-01 (+6d) |  | 85.3d → 112.6d |
| 4 | **Sanitary Sewerage** |  | 2026-11-22 → 2026-11-29 (+7d) |  |  |
| 1 | **Manhole** |  | 2026-11-22 → 2026-11-29 (+7d) |  |  |
| CON-LEG101-LR-3530 | Installation of Fiberglass Manholes [Local – 02 ] |  | 2026-11-22 → 2026-11-29 (+7d) |  | -52.24d → -30.74d |
| 3 | **Local – 03** |  | 2026-11-28 → 2026-12-02 (+4d) |  |  |
| 1 | **Stormwater Utilities** |  | 2026-11-28 → 2026-12-02 (+4d) |  |  |
| 1 | **Manhole** |  | 2026-11-25 → 2026-12-01 (+6d) |  |  |
| CON-LEG101-LR-11280 | Finishing and Testing of Inlet Manholes [Local – 03 ] |  | 2026-11-25 → 2026-12-01 (+6d) | 85% → 90% | 83.9d → 110.4d |
| 3 | **Concrete Chambers/Outfalls** |  | 2026-11-28 → 2026-12-02 (+4d) |  |  |
| CON-LEG101-LR-11340 | FInishing and Testing of Concrete chambers [Local – 03 ] |  | 2026-11-28 → 2026-12-02 (+4d) | 85% → 90% | 85.3d → 112.6d |
| 4 | **Local – 04** |  | 2027-01-31 → 2027-02-07 (+7d) |  |  |
| 1 | **Stormwater Utilities** |  | 2027-01-31 → 2027-02-07 (+7d) |  |  |
| 2 | **Pipe Work** |  | 2026-12-29 → 2027-01-05 (+7d) |  |  |
| CON-LEG101-LR-3930 | Testing for Stormwater Utilities Network [Local – 04 ] | 2026-12-09 → 2026-12-16 (+7d) | 2026-12-22 → 2026-12-29 (+7d) |  | -66.24d → -44.74d |
| CON-LEG101-LR-4140 | Installation of Micron Marker Magnetic Tape [Local – 04 ] | 2026-12-23 → 2026-12-30 (+7d) | 2026-12-24 → 2026-12-31 (+7d) |  | -66.24d → -44.74d |
| CON-LEG101-LR-4250 | Backfilling to Subgrade Elevation [Local – 04 ] | 2026-12-26 → 2027-01-02 (+7d) | 2026-12-29 → 2027-01-05 (+7d) |  | -66.24d → -44.74d |
| 1 | **Manhole** |  | 2027-01-06 → 2027-01-13 (+7d) |  |  |
| CON-LEG101-LR-4370 | Installation of Inlet Manholes [Local – 04 ] |  | 2026-12-13 → 2026-12-20 (+7d) |  | -58.24d → -36.74d |
| CON-LEG101-LR-11380 | Backfilling of Inlet Manholes [Local – 04 ] | 2026-12-14 → 2026-12-21 (+7d) | 2026-12-20 → 2026-12-27 (+7d) |  | -58.24d → -36.74d |
| CON-LEG101-LR-11390 | Finishing and Testing of Inlet Manholes [Local – 04 ] | 2026-12-21 → 2026-12-28 (+7d) | 2027-01-06 → 2027-01-13 (+7d) |  | 62.7d → 88.2d |
| 3 | **Concrete Chambers/Outfalls** | 2026-12-14 → 2026-12-21 (+7d) | 2027-01-31 → 2027-02-07 (+7d) |  |  |
| CON-LEG101-LR-11400 | Excavation of Concrete chambers [Local – 04 ] | 2026-12-14 → 2026-12-21 (+7d) | 2026-12-20 → 2026-12-27 (+7d) |  | 18d → 39.5d |
| CON-LEG101-LR-11410 | PC of Concrete chambers [Local – 04 ] | 2026-12-21 → 2026-12-28 (+7d) | 2026-12-22 → 2026-12-29 (+7d) |  | 18d → 39.5d |
| CON-LEG101-LR-4470 | Installation of Concrete chambers [Local – 04 ] | 2026-12-23 → 2026-12-30 (+7d) | 2027-01-03 → 2027-01-10 (+7d) |  | 18d → 39.5d |
| CON-LEG101-LR-11420 | Installation UPVC Pipes to Concrete chambers [Local – 04 ] | 2027-01-04 → 2027-01-11 (+7d) | 2027-01-10 → 2027-01-17 (+7d) |  | 18d → 39.5d |
| CON-LEG101-LR-11430 | Backfilling to Concrete chambers [Local – 04 ] | 2027-01-11 → 2027-01-18 (+7d) | 2027-01-17 → 2027-01-24 (+7d) |  | 18d → 39.5d |
| CON-LEG101-LR-11440 | FInishing and Testing of Concrete chambers [Local – 04 ] | 2027-01-18 → 2027-01-25 (+7d) | 2027-01-31 → 2027-02-07 (+7d) |  | 41.65d → 67.15d |
| 4 | **Sanitary Sewerage** |  | 2026-12-21 → 2026-12-28 (+7d) |  |  |
| 2 | **Pipe Work** |  | 2026-12-21 → 2026-12-28 (+7d) |  |  |
| CON-LEG101-LR-3180 | Concrete encasement, pipe dia 200 and 350 mm [Local – 04 ] | 2026-12-09 → 2026-12-16 (+7d) | 2026-12-12 → 2026-12-19 (+7d) |  | -59.24d → -37.74d |
| CON-LEG101-LR-3360 | Installation of Micron Marker Magnetic Tape [Local – 04 ] | 2026-12-13 → 2026-12-20 (+7d) | 2026-12-14 → 2026-12-21 (+7d) |  | -59.24d → -37.74d |
| CON-LEG101-LR-3450 | Backfilling to Subgrade Elevation [Local – 04 ] | 2026-12-15 → 2026-12-22 (+7d) | 2026-12-21 → 2026-12-28 (+7d) |  | -59.24d → -37.74d |
| 1 | **Manhole** |  | 2026-12-12 → 2026-12-19 (+7d) |  |  |
| CON-LEG101-LR-3540 | Installation of Fiberglass Manholes [Local – 04 ] |  | 2026-12-12 → 2026-12-19 (+7d) |  | -51.24d → -29.74d |
| 5 | **Local – 05** |  | 2026-12-09 → 2026-12-16 (+7d) |  |  |
| 4 | **Sanitary Sewerage** |  | 2026-12-09 → 2026-12-16 (+7d) |  |  |
| 1 | **Manhole** |  | 2026-12-09 → 2026-12-16 (+7d) |  |  |
| CON-LEG101-LR-3550 | Installation of Fiberglass Manholes [Local – 05 ] |  | 2026-12-09 → 2026-12-16 (+7d) |  | 48.1d → 69.6d |
| 8 | **Local – 08** |  | 2027-02-01 → 2027-02-08 (+7d) |  |  |
| 1 | **Stormwater Utilities** |  | 2027-02-01 → 2027-02-08 (+7d) |  |  |
| 1 | **Manhole** |  | 2027-01-07 → 2027-01-14 (+7d) |  |  |
| CON-LEG101-LR-11750 | Finishing and Testing of Inlet Manholes [Local – 08 ] |  | 2027-01-07 → 2027-01-14 (+7d) |  | 62.7d → 88.2d |
| 3 | **Concrete Chambers/Outfalls** |  | 2027-02-01 → 2027-02-08 (+7d) |  |  |
| CON-LEG101-LR-11800 | FInishing and Testing of Concrete chambers [Local – 08 ] |  | 2027-02-01 → 2027-02-08 (+7d) |  | 41.65d → 67.15d |
| 7 | **Shallow infrastructure network** |  | 2027-10-17 → 2027-10-24 (+7d) |  |  |
| 1 | **Local – 01** |  | 2027-08-05 → 2027-08-12 (+7d) |  |  |
| 1 | **LOCAL - 01 Segment-01 (From 0+000 to 1+066)** |  | 2027-07-31 → 2027-08-07 (+7d) |  |  |
| 1 | **Electrical Works** |  | 2027-07-06 → 2027-07-13 (+7d) |  |  |
| 3 | **Low Voltage** |  | 2027-07-06 → 2027-07-13 (+7d) |  |  |
| CON-LEG101-LR-8760 | Installation of Earthing System [Local – 01 Segment-01] |  | 2027-07-06 → 2027-07-13 (+7d) |  | 41.5d → 35.5d |
| 10 | **Telecommunications** |  | 2027-07-27 → 2027-07-26 (-1d) |  |  |
| CON-LEG101-LR-9330 | Installation of Reinforced concrete manhole [Local – 01 Segment-01] |  | 2027-07-27 → 2027-07-26 (-1d) |  | 22.7d → 23.75d |
| CON-LEG101-LR-9030 | Installation of Sand encased duct banks for secondary network [Local – 01 Segment-01] |  | 2027-07-10 → 2027-07-14 (+4d) | 60% → 75% | 22.7d → 23.75d |
| CON-LEG101-LR-9130 | Installation of Sand and soil encased duct banks, for combined network of primary and secondary [Local – 01 Segment-01 |  | 2027-07-18 → 2027-07-19 (+1d) | 60% → 75% | 22.7d → 23.75d |
| CON-LEG101-LR-9230 | Installation of Concrete encased duct banks for for combined network of primary and secondary [Local – 01 Segment-01] |  | 2027-07-25 → 2027-07-24 (-1d) | 60% → 75% | 22.7d → 23.75d |
| 11 | **CCTV feeding system and GSM** |  | 2027-07-10 → 2027-07-17 (+7d) |  |  |
| CON-LEG101-LR-9780 | Installation of Security workstation with 1 x 19" LED screen [Local – 01 Segment-01] | 2027-07-04 → 2027-07-11 (+7d) | 2027-07-04 → 2027-07-11 (+7d) |  | 35.6d → 29.6d |
| CON-LEG101-LR-9790 | Installation of LED Screen 43" (24/7 operation) with Ethernet decoders [Local – 01 Segment-01] | 2027-07-05 → 2027-07-12 (+7d) | 2027-07-06 → 2027-07-13 (+7d) |  | 35.6d → 29.6d |
| CON-LEG101-LR-9830 | Installation of Network Video Recorder 4k 64 Channel [Local – 01 Segment-01] | 2027-07-07 → 2027-07-14 (+7d) | 2027-07-07 → 2027-07-14 (+7d) |  | 35.6d → 29.6d |
| CON-LEG101-LR-9840 | Installation of Keypad [Local – 01 Segment-01] | 2027-07-08 → 2027-07-15 (+7d) | 2027-07-10 → 2027-07-17 (+7d) |  | 35.6d → 29.6d |
| 12 | **Earthing System** | 2027-07-11 → 2027-07-18 (+7d) | 2027-07-12 → 2027-07-19 (+7d) |  |  |
| CON-LEG101-LR-8280 | Installation of Earthing for Distribution panels,SL feeder pillars, KWH, Unit substations and RMU [Local – 01 Segment-01 | 2027-07-11 → 2027-07-18 (+7d) | 2027-07-12 → 2027-07-19 (+7d) |  | 35.6d → 29.6d |
| 9 | **Road Lighting** |  | 2027-07-31 → 2027-08-07 (+7d) |  |  |
| CON-LEG101-LR-7420 | Installation of Unit Substation Including concrete foundations and fencing [Local – 01 Segment-01] |  | 2027-07-10 → 2027-07-17 (+7d) |  | -103.65d → -78.15d |
| CON-LEG101-LR-8330 | Installation of Earthing for Streetlighting feeders for every end pole circuits. [Local – 01 Segment-01] |  | 2027-07-31 → 2027-08-07 (+7d) |  | -103.65d → -78.15d |
| CON-LEG101-LR-7500 | Installation of Ring Main Unit RMU [Local – 01 Segment-01] | 2027-07-10 → 2027-07-17 (+7d) | 2027-07-27 → 2027-08-03 (+7d) |  | -103.65d → -78.15d |
| 2 | **LOCAL - 01 Segment-02 (From 1+066 to 2+133)** |  | 2027-08-05 → 2027-08-12 (+7d) |  |  |
| 1 | **Electrical Works** |  | 2027-08-01 → 2027-08-08 (+7d) |  |  |

| ID | Task | Start | Finish | Complete | Total float |
| --- | --- | --- | --- | --- | --- |
| 3 | **Low Voltage** |  | 2027-08-01 → 2027-08-08 (+7d) |  |  |
| CON-LEG101-LR-8770 | Installation of Earthing System [Local – 01 Segment-02] |  | 2027-08-01 → 2027-08-08 (+7d) |  | 19.35d → 13.35d |
| 12 | **Earthing System** |  | 2027-08-05 → 2027-08-12 (+7d) |  |  |
| CON-LEG101-LR-8290 | Installation of Earthing for Distribution panels,SL feeder pillars, KWH, Unit substations and RMU [Local – 01 Segment-02 |  | 2027-08-05 → 2027-08-12 (+7d) |  | -103.65d → -78.15d |
| 9 | **Road Lighting** |  | 2027-07-05 → 2027-07-12 (+7d) |  |  |
| CON-LEG101-LR-8340 | Installation of Earthing for Streetlighting feeders for every end pole circuits. [Local – 01 Segment-02] |  | 2027-07-05 → 2027-07-12 (+7d) |  | -104d → -82.5d |
| 3 | **LOCAL - 01 Segment-03 (From 2+133 to 3+200)** |  | 2027-07-10 → 2027-07-17 (+7d) |  |  |
| 5 | **TSE Network** |  | 2026-11-24 → 2026-12-01 (+7d) |  |  |
| 1 | **Valves/Chamber** |  | 2026-11-24 → 2026-12-01 (+7d) |  |  |
| CON-LEG101-LR-15040 | Installation of Air Valve chambers [Local – 01 Segment-03] |  | 2026-11-24 → 2026-12-01 (+7d) |  | 88.75d → 110.25d |
| CON-LEG101-LR-2630 | Installation of Wash out chambers [Local – 01 Segment-03] |  | 2026-11-23 → 2026-11-30 (+7d) |  | 88.75d → 110.25d |
| 6 | **Public Water Utility Distribution** |  | 2026-11-24 → 2026-12-01 (+7d) |  |  |
| 1 | **Valves/Chamber** |  | 2026-11-24 → 2026-12-01 (+7d) |  |  |
| CON-LEG101-LR-1270 | Installation of Air Valve chambers [Local – 01 Segment-03] |  | 2026-11-24 → 2026-12-01 (+7d) |  | 154.4d → 148.4d |
| CON-LEG101-LR-1230 | Installation of Wash out chambers [Local – 01 Segment-03] |  | 2026-11-23 → 2026-11-30 (+7d) |  | 154.4d → 148.4d |
| 10 | **Telecommunications** |  | 2027-06-07 → 2026-11-08 (-211d) |  |  |
| CON-LEG101-LR-9350 | Installation of Reinforced concrete manhole [Local – 01 Segment-03] |  | 2027-06-07 → 2026-11-08 A (-211d) | 70% → 100% | -3.5d → none |
| CON-LEG101-LR-8850 | Installation of Sand and soil encased duct banks for primary network [Local – 01 Segment-03] |  | 2027-05-27 → 2026-11-05 A (-203d) | 90% → 100% | -3.5d → none |
| CON-LEG101-LR-8950 | Installation of Concrete encased duct banks for primary network [Local – 01 Segment-03] |  | 2027-05-29 → 2026-11-05 A (-205d) | 90% → 100% | -3.5d → none |
| CON-LEG101-LR-9050 | Installation of Sand encased duct banks for secondary network [Local – 01 Segment-03] |  | 2027-05-30 → 2026-11-05 A (-206d) | 90% → 100% | -3.5d → none |
| CON-LEG101-LR-9150 | Installation of Sand and soil encased duct banks, for combined network of primary and secondary [Local – 01 Segment-03 |  | 2027-06-01 → 2026-11-05 A (-208d) | 90% → 100% | -3.5d → none |
| 12 | **Earthing System** | 2027-06-27 → 2027-07-04 (+7d) | 2027-07-06 → 2027-07-12 (+6d) |  |  |
| CON-LEG101-LR-8300 | Installation of Earthing for Distribution panels,SL feeder pillars, KWH, Unit substations and RMU [Local – 01 Segment-03 | 2027-06-27 → 2027-07-04 (+7d) | 2027-07-06 → 2027-07-12 (+6d) |  | -20.3d → -25.6d |
| 9 | **Road Lighting** |  | 2027-07-10 → 2027-07-17 (+7d) |  |  |
| CON-LEG101-LR-8450 | Installation of Street Lighting feeder pillars / Lighting panels [Local – 01 Segment-03] |  | 2027-06-27 → 2026-11-05 A (-234d) | 90% → 100% | -96.9d → none |
| CON-LEG101-LR-8350 | Installation of Earthing for Streetlighting feeders for every end pole circuits. [Local – 01 Segment-03] |  | 2027-07-10 → 2027-07-17 (+7d) |  | -104d → -82.5d |
| 2 | **Local – 02** |  | 2027-07-18 → 2027-07-25 (+7d) |  |  |
| 5 | **TSE Network** |  | 2026-11-24 → 2026-12-01 (+7d) |  |  |
| 1 | **Valves/Chamber** |  | 2026-11-24 → 2026-12-01 (+7d) |  |  |
| CON-LEG101-LR-2410 | Installation of Wash out Valves [Local – 02 ] |  | 2026-11-24 → 2026-12-01 (+7d) |  | 31.1d → 52.6d |
| CON-LEG101-LR-2710 | Installation of Wash out chambers [Local – 02 ] |  | 2026-11-24 → 2026-12-01 (+7d) |  | 31.1d → 52.6d |
| 6 | **Public Water Utility Distribution** |  | 2026-11-25 → 2026-12-02 (+7d) |  |  |
| 1 | **Valves/Chamber** |  | 2026-11-25 → 2026-12-02 (+7d) |  |  |
| CON-LEG101-LR-15080 | Installation of Air Valve chambers [Local – 02 ] |  | 2026-11-24 → 2026-12-01 (+7d) |  | 57.65d → 79.15d |
| CON-LEG101-LR-1030 | Installation of Gate (Sluice) valves (Direct buried) [Local – 02 ] |  | 2026-11-25 → 2026-12-02 (+7d) |  | 57.65d → 79.15d |
| CON-LEG101-LR-15070 | Installation of Wash out chambers [Local – 02 ] |  | 2026-11-23 → 2026-11-30 (+7d) |  | 31.9d → 53.4d |
| 1 | **Electrical Works** |  | 2027-07-18 → 2027-07-25 (+7d) |  |  |
| 3 | **Low Voltage** |  | 2027-07-18 → 2027-07-25 (+7d) |  |  |
| CON-LEG101-LR-8490 | Installation of Low Voltage Distribution Panel [Local – 02 ] | 2027-06-27 → 2027-07-04 (+7d) | 2027-07-07 → 2027-07-14 (+7d) |  | -102d → -80.5d |
| CON-LEG101-LR-8540 | Installation of KWH Meters Walls [Local – 02 ] | 2027-07-08 → 2027-07-15 (+7d) | 2027-07-15 → 2027-07-22 (+7d) |  | 30.6d → 24.6d |
| CON-LEG101-LR-8790 | Installation of Earthing System [Local – 02 ] | 2027-07-17 → 2027-07-24 (+7d) | 2027-07-18 → 2027-07-25 (+7d) |  | 30.6d → 24.6d |
| 11 | **CCTV feeding system and GSM** |  | 2027-07-04 → 2027-07-11 (+7d) |  |  |
| CON-LEG101-LR-9800 | Installation of LED Screen 43" (24/7 operation) with Ethernet decoders [Local – 02 ] | 2027-06-27 → 2027-07-04 (+7d) | 2027-07-04 → 2027-07-11 (+7d) |  | -99d → -77.5d |
| 12 | **Earthing System** | 2027-07-12 → 2027-07-19 (+7d) | 2027-07-18 → 2027-07-25 (+7d) |  |  |
| CON-LEG101-LR-8310 | Installation of Earthing for Distribution panels,SL feeder pillars, KWH, Unit substations and RMU [Local – 02 ] | 2027-07-12 → 2027-07-19 (+7d) | 2027-07-18 → 2027-07-25 (+7d) |  | -105d → -83.5d |
| 9 | **Road Lighting** |  | 2027-07-14 → 2027-07-21 (+7d) |  |  |
| CON-LEG101-LR-8360 | Installation of Earthing for Streetlighting feeders for every end pole circuits. [Local – 02 ] |  | 2027-07-14 → 2027-07-21 (+7d) |  | -105d → -83.5d |
| CON-LEG101-LR-7430 | Installation of Unit Substation Including concrete foundations and fencing [Local – 02 ] | 2027-05-29 → 2027-06-05 (+7d) | 2027-06-05 → 2027-06-12 (+7d) |  | -87d → -65.5d |
| CON-LEG101-LR-7510 | Installation of Ring Main Unit RMU [Local – 02 ] | 2027-06-27 → 2027-07-04 (+7d) | 2027-07-11 → 2027-07-18 (+7d) |  | -105d → -83.5d |
| 3 | **Local – 03** |  | 2027-08-26 → 2027-08-12 (-14d) |  |  |
| 5 | **TSE Network** |  | 2026-11-26 → 2026-12-03 (+7d) |  |  |
| 1 | **Valves/Chamber** |  | 2026-11-26 → 2026-12-03 (+7d) |  |  |
| CON-LEG101-LR-2720 | Installation of Air Valve chambers [Local – 03 ] |  | 2026-11-26 → 2026-12-03 (+7d) |  | 31.1d → 52.6d |
| CON-LEG101-LR-2640 | Installation of Wash out chambers [Local – 03 ] |  | 2026-11-25 → 2026-12-02 (+7d) |  | 31.1d → 52.6d |
| 6 | **Public Water Utility Distribution** |  | 2026-11-28 → 2026-12-05 (+7d) |  |  |
| 1 | **Valves/Chamber** |  | 2026-11-28 → 2026-12-05 (+7d) |  |  |
| CON-LEG101-LR-15110 | Installation of Air Valve chambers [Local – 03 ] |  | 2026-11-28 → 2026-12-05 (+7d) |  | 31.1d → 52.6d |
| 1 | **Electrical Works** |  | 2027-07-10 → 2027-06-28 (-12d) |  |  |
| 3 | **Low Voltage** |  | 2027-07-10 → 2027-06-28 (-12d) |  |  |
| CON-LEG101-LR-7820 | Excavation works for Low Voltage Cables [Local – 03 ] | 2027-06-09 → 2026-10-31 A (-221d) | 2027-06-22 → 2027-06-20 (-2d) | 0% → 70% | -118.3d → -73d |
| CON-LEG101-LR-7920 | Installation of Low Voltage Cables [Local – 03 ] | 2027-06-23 → 2026-11-01 A (-234d) | 2027-07-06 → 2027-06-24 (-12d) | 0% → 70% | -118.3d → -72.8d |
| CON-LEG101-LR-8800 | Installation of Earthing System [Local – 03 ] | 2027-07-07 → 2027-06-24 (-13d) | 2027-07-10 → 2027-06-28 (-12d) |  | -118.3d → -72.8d |
| 10 | **Telecommunications** |  | 2027-08-03 → 2027-07-13 (-21d) |  |  |
| CON-LEG101-LR-8870 | Installation of Sand and soil encased duct banks for primary network [Local – 03 ] |  | 2027-07-06 → 2027-06-28 (-8d) | 30% → 60% | -115.2d → -73d |
| CON-LEG101-LR-9070 | Installation of Sand encased duct banks for secondary network [Local – 03 ] |  | 2027-07-15 → 2027-07-01 (-14d) | 30% → 60% | -118.3d → -73d |
| CON-LEG101-LR-9170 | Installation of Sand and soil encased duct banks, for combined network of primary and secondary [Local – 03 ] |  | 2027-07-29 → 2027-07-08 (-21d) | 30% → 60% | -118.3d → -73d |
| CON-LEG101-LR-9270 | Installation of Concrete encased duct banks for for combined network of primary and secondary [Local – 03 ] |  | 2027-08-03 → 2027-07-13 (-21d) |  | -118.3d → -73d |
| 12 | **Earthing System** | 2027-08-18 → 2027-08-04 (-14d) | 2027-08-26 → 2027-08-12 (-14d) |  |  |
| CON-LEG101-LR-15170 | Installation of Earthing for Distribution panels,SL feeder pillars, KWH, Unit substations and RMU [Local – 03 ] | 2027-08-18 → 2027-08-04 (-14d) | 2027-08-26 → 2027-08-12 (-14d) |  | -11.3d → 1.4d |
| 9 | **Road Lighting** |  | 2027-08-18 → 2027-08-04 (-14d) |  |  |

| ID | Task | Start | Finish | Complete | Total float |
| --- | --- | --- | --- | --- | --- |
| CON-LEG101-LR-8120 | Installation of Lighting poles [Local – 03 ] |  | 2027-06-28 → 2027-06-22 (-6d) | 70% → 90% | -105.5d → -72.6d |
| CON-LEG101-LR-7440 | Installation of Unit Substation Including concrete foundations and fencing [Local – 03 ] |  | 2027-07-25 → 2027-07-11 (-14d) |  | -11.3d → 1.4d |
| CON-LEG101-LR-8220 | Installation of Street Lighting Luminaire [Local – 03 ] |  | 2027-06-30 → 2027-06-22 (-8d) | 70% → 90% | 2d → 8.8d |
| CON-LEG101-LR-7520 | Installation of Ring Main Unit RMU [Local – 03 ] | 2027-07-25 → 2027-07-11 (-14d) | 2027-08-11 → 2027-07-28 (-14d) |  | -11.3d → 1.4d |
| CON-LEG101-LR-8370 | Installation of Earthing for Streetlighting feeders for every end pole circuits. [Local – 03 ] | 2027-08-11 → 2027-07-28 (-14d) | 2027-08-18 → 2027-08-04 (-14d) |  | -11.3d → 1.4d |
| 4 | **Local – 04** |  | 2027-10-17 → 2027-10-24 (+7d) |  |  |
| 5 | **TSE Network** |  | 2027-05-11 → 2027-05-23 (+12d) |  |  |
| 2 | **Pipe Work** |  | 2027-01-31 → 2027-02-07 (+7d) |  |  |
| CON-LEG101-LR-1350 | Excavation for TSE Network [Local – 04 ] |  | 2026-12-31 → 2027-01-07 (+7d) |  | -66.24d → -44.74d |
| CON-LEG101-LR-1470 | Granular bedding for TSE Network [Local – 04 ] |  | 2027-01-02 → 2027-01-09 (+7d) |  | -66.24d → -44.74d |
| CON-LEG101-LR-1580 | Installation of Pipe for TSE Network [Local – 04 ] |  | 2027-01-09 → 2027-01-16 (+7d) |  | -66.24d → -44.74d |
| CON-LEG101-LR-1910 | Granular Surround for TSE Network [Local – 04 ] |  | 2027-01-23 → 2027-01-30 (+7d) |  | -66.24d → -44.74d |
| CON-LEG101-LR-2020 | Installation of Micron Marker Magnetic Tape [Local – 04 ] |  | 2027-01-24 → 2027-01-31 (+7d) |  | -66.24d → -44.74d |
| CON-LEG101-LR-2130 | Backfilling to Subgrade Elevation [Local – 04 ] |  | 2027-01-31 → 2027-02-07 (+7d) |  | -66.24d → -44.74d |
| CON-LEG101-LR-1690 | Testing for TSE Network [Local – 04 ] | 2027-01-09 → 2027-01-16 (+7d) | 2027-01-16 → 2027-01-23 (+7d) |  | -66.24d → -44.74d |
| CON-LEG101-LR-1810 | Concrete encasement, pipe dia 110 mm [Local – 04 ] | 2027-01-16 → 2027-01-23 (+7d) | 2027-01-19 → 2027-01-26 (+7d) |  | -66.24d → -44.74d |
| 1 | **Valves/Chamber** | 2027-01-24 → 2027-01-31 (+7d) | 2027-05-11 → 2027-05-23 (+12d) |  |  |
| CON-LEG101-LR-2730 | Installation of Air Valve chambers [Local – 04 ] | 2027-01-24 → 2027-01-31 (+7d) | 2027-02-23 → 2027-03-02 (+7d) |  | -50.48d → -28.98d |
| CON-LEG101-LR-15060 | Installation of Wash-out Valve chambers [Local – 04 ] | 2027-02-23 → 2027-03-02 (+7d) | 2027-03-20 → 2027-03-27 (+7d) |  | -50.48d → -28.98d |
| CON-LEG101-LR-2240 | Installation of Gate (Sluice) valves (Direct buried) [Local – 04 ] | 2027-02-23 → 2027-03-02 (+7d) | 2027-03-06 → 2027-03-13 (+7d) |  | -38.48d → -16.98d |
| CON-LEG101-LR-2350 | Installation of Wash-out Valves [Local – 04 ] | 2027-03-20 → 2027-03-27 (+7d) | 2027-04-06 → 2027-04-13 (+7d) |  | -50.48d → -28.98d |
| CON-LEG101-LR-2430 | Installation of Air Valves [Local – 04 ] | 2027-04-06 → 2027-04-13 (+7d) | 2027-04-24 → 2027-05-01 (+7d) |  | -50.48d → -28.98d |
| CON-LEG101-LR-2510 | Installation of Fire Hydrant [Local – 04 ] | 2027-04-24 → 2027-05-01 (+7d) | 2027-05-11 → 2027-05-23 (+12d) |  | -50.48d → -28.98d |
| 6 | **Public Water Utility Distribution** |  | 2027-04-26 → 2027-05-03 (+7d) |  |  |
| 2 | **Pipe Work** |  | 2027-01-31 → 2027-02-07 (+7d) |  |  |
| CON-LEG101-LR-10090 | Excavation for Public Water Utility Distribution Piping [Local – 04 ] |  | 2027-01-02 → 2027-01-09 (+7d) |  | -66.2d → -44.7d |
| CON-LEG101-LR-10190 | Granular bedding for Public Water Utility Distribution Piping [Local – 04 ] |  | 2027-01-03 → 2027-01-10 (+7d) |  | -66.2d → -44.7d |
| CON-LEG101-LR-10290 | Installation of Pipe for Public Water Utility Distribution Piping [Local – 04 ] |  | 2027-01-10 → 2027-01-17 (+7d) |  | -66.2d → -44.7d |
| CON-LEG101-LR-10590 | Granular Surround for Public Water Utility Distribution Piping [Local – 04 ] |  | 2027-01-23 → 2027-01-30 (+7d) |  | -66.2d → -44.7d |
| CON-LEG101-LR-10390 | Testing for Public Water Utility Distribution Piping [Local – 04 ] | 2027-01-10 → 2027-01-17 (+7d) | 2027-01-16 → 2027-01-23 (+7d) |  | -66.2d → -44.7d |
| CON-LEG101-LR-10490 | Concrete encasement, pipe dia 110 mm [Local – 04 ] | 2027-01-16 → 2027-01-23 (+7d) | 2027-01-19 → 2027-01-26 (+7d) |  | -66.2d → -44.7d |
| CON-LEG101-LR-10690 | Installation of Micron Marker Magnetic Tape [Local – 04 ] | 2027-01-23 → 2027-01-30 (+7d) | 2027-01-26 → 2027-02-02 (+7d) |  | -66.2d → -44.7d |
| CON-LEG101-LR-10790 | Backfilling to Subgrade Elevation [Local – 04 ] | 2027-01-26 → 2027-02-02 (+7d) | 2027-01-31 → 2027-02-07 (+7d) |  | -66.2d → -44.7d |
| 1 | **Valves/Chamber** | 2027-03-20 → 2027-03-27 (+7d) | 2027-04-26 → 2027-05-03 (+7d) |  |  |
| CON-LEG101-LR-1280 | Installation of Air Valve chambers [Local – 04 ] | 2027-03-20 → 2027-03-27 (+7d) | 2027-04-12 → 2027-04-19 (+7d) |  | 64.52d → 64.92d |
| CON-LEG101-LR-1050 | Installation of Gate (Sluice) valves (Direct buried) [Local – 04 ] | 2027-04-12 → 2027-04-19 (+7d) | 2027-04-19 → 2027-04-26 (+7d) |  | 64.52d → 64.92d |
| CON-LEG101-LR-1180 | Installation of Air Valves [Local – 04 ] | 2027-04-19 → 2027-04-26 (+7d) | 2027-04-26 → 2027-05-03 (+7d) |  | 64.52d → 64.92d |
| 8 | **Electrical Works** | 2027-06-10 → 2027-06-17 (+7d) | 2027-07-25 → 2027-08-01 (+7d) |  |  |
| 3 | **Low Voltage** | 2027-06-10 → 2027-06-17 (+7d) | 2027-07-25 → 2027-08-01 (+7d) |  |  |
| CON-LEG101-LR-7830 | Excavation works for Low Voltage Cables [Local – 04 ] | 2027-06-10 → 2027-06-17 (+7d) | 2027-06-24 → 2027-07-01 (+7d) |  | -169d → -147.5d |
| CON-LEG101-LR-8030 | Installation of Low Voltage Cables Duct Banks [Local – 04 ] | 2027-06-26 → 2027-07-03 (+7d) | 2027-07-06 → 2027-07-13 (+7d) |  | -169d → -147.5d |
| CON-LEG101-LR-7930 | Installation of Low Voltage Cables [Local – 04 ] | 2027-07-07 → 2027-07-14 (+7d) | 2027-07-21 → 2027-07-28 (+7d) |  | -108d → -86.5d |
| CON-LEG101-LR-8810 | Installation of Earthing System [Local – 04 ] | 2027-07-22 → 2027-07-29 (+7d) | 2027-07-25 → 2027-08-01 (+7d) |  | -45.4d → -51.4d |
| 10 | **Telecommunications** | 2027-07-07 → 2027-07-14 (+7d) | 2027-10-02 → 2027-10-09 (+7d) |  |  |
| CON-LEG101-LR-8880 | Installation of Sand and soil encased duct banks for primary network [Local – 04 ] | 2027-07-07 → 2027-07-14 (+7d) | 2027-07-26 → 2027-08-02 (+7d) |  | -169d → -147.5d |
| CON-LEG101-LR-8980 | Installation of Concrete encased duct banks for primary network [Local – 04 ] | 2027-07-27 → 2027-08-03 (+7d) | 2027-08-02 → 2027-08-09 (+7d) |  | -169d → -147.5d |
| CON-LEG101-LR-9080 | Installation of Sand encased duct banks for secondary network [Local – 04 ] | 2027-08-03 → 2027-08-10 (+7d) | 2027-08-10 → 2027-08-17 (+7d) |  | -169d → -147.5d |
| CON-LEG101-LR-9180 | Installation of Sand and soil encased duct banks, for combined network of primary and secondary [Local – 04 ] | 2027-08-11 → 2027-08-18 (+7d) | 2027-08-31 → 2027-09-07 (+7d) |  | -169d → -147.5d |
| CON-LEG101-LR-9280 | Installation of Concrete encased duct banks for for combined network of primary and secondary [Local – 04 ] | 2027-09-01 → 2027-09-08 (+7d) | 2027-09-06 → 2027-09-13 (+7d) |  | -169d → -147.5d |
| CON-LEG101-LR-9380 | Installation of Reinforced concrete manhole [Local – 04 ] | 2027-09-07 → 2027-09-14 (+7d) | 2027-10-02 → 2027-10-09 (+7d) |  | -169d → -147.5d |
| 11 | **CCTV feeding system and GSM** | 2027-07-27 → 2027-08-03 (+7d) | 2027-10-07 → 2027-10-14 (+7d) |  |  |
| CON-LEG101-LR-8600 | Excavation works for Low Voltage Cables for CCTV feeding system and GSM [Local – 04 ] | 2027-07-27 → 2027-08-03 (+7d) | 2027-08-09 → 2027-08-16 (+7d) |  | -46.4d → -52.4d |
| CON-LEG101-LR-8670 | Installation of Low Voltage Cables for CCTV feeding system and GSM [Local – 04 ] | 2027-08-10 → 2027-08-17 (+7d) | 2027-08-24 → 2027-08-31 (+7d) |  | -46.4d → -52.4d |
| CON-LEG101-LR-9490 | Installation of 8POE ports Industrial Switches for remote poles [Local – 04 ] | 2027-08-25 → 2027-09-01 (+7d) | 2027-09-01 → 2027-09-08 (+7d) |  | -46.4d → -52.4d |
| CON-LEG101-LR-9660 | Installation of IP Outdoor CCTV POE Camera,5 MP, Metal Housing [Local – 04 ] | 2027-09-02 → 2027-09-09 (+7d) | 2027-09-11 → 2027-09-18 (+7d) |  | -46.4d → -52.4d |
| CON-LEG101-LR-9740 | Installation of Outdoor PTZ IP66 [Local – 04 ] | 2027-09-12 → 2027-09-19 (+7d) | 2027-09-22 → 2027-09-30 (+8d) |  | -46.4d → -52.4d |
| CON-LEG101-LR-9990 | Installation of Short Range wireless point to point wireless bridge [Local – 04 ] | 2027-09-25 → 2027-10-02 (+7d) | 2027-10-07 → 2027-10-14 (+7d) |  | -46.4d → -52.4d |
| 12 | **Earthing System** | 2027-10-09 → 2027-10-16 (+7d) | 2027-10-17 → 2027-10-24 (+7d) |  |  |
| CON-LEG101-LR-15160 | Installation of Earthing for Distribution panels,SL feeder pillars, KWH, Unit substations and RMU [Local – 04 ] | 2027-10-09 → 2027-10-16 (+7d) | 2027-10-17 → 2027-10-24 (+7d) |  | -46.4d → -52.4d |
| 9 | **Road Lighting** | 2027-06-28 → 2027-07-03 (+5d) | 2027-09-09 → 2027-09-16 (+7d) |  |  |
| CON-LEG101-LR-8130 | Installation of Lighting poles [Local – 04 ] | 2027-06-28 → 2027-07-03 (+5d) | 2027-07-19 → 2027-07-22 (+3d) |  | -105.5d → -81.5d |
| CON-LEG101-LR-8230 | Installation of Street Lighting Luminaire [Local – 04 ] | 2027-07-19 → 2027-07-24 (+5d) | 2027-07-26 → 2027-07-29 (+3d) |  | -10.9d → -14.4d |
| CON-LEG101-LR-7450 | Installation of Unit Substation Including concrete foundations and fencing [Local – 04 ] | 2027-08-10 → 2027-08-17 (+7d) | 2027-08-17 → 2027-08-24 (+7d) |  | -23.4d → -29.4d |
| CON-LEG101-LR-7530 | Installation of Ring Main Unit RMU [Local – 04 ] | 2027-08-18 → 2027-08-25 (+7d) | 2027-09-02 → 2027-09-09 (+7d) |  | -23.4d → -29.4d |
| CON-LEG101-LR-8380 | Installation of Earthing for Streetlighting feeders for every end pole circuits. [Local – 04 ] | 2027-09-04 → 2027-09-11 (+7d) | 2027-09-09 → 2027-09-16 (+7d) |  | -23.4d → -29.4d |
| 5 | **Local – 05** |  | 2027-08-05 → 2027-08-09 (+4d) |  |  |
| 5 | **TSE Network** |  | 2026-12-12 → 2026-12-19 (+7d) |  |  |
| 1 | **Valves/Chamber** |  | 2026-12-12 → 2026-12-19 (+7d) |  |  |
| CON-LEG101-LR-2740 | Installation of Air Valve chambers [Local – 05 ] |  | 2026-12-12 → 2026-12-19 (+7d) |  | 175.84d → 176.24d |
| CON-LEG101-LR-2660 | Installation of Wash out chambers [Local – 05 ] |  | 2026-12-10 → 2026-12-17 (+7d) |  | 175.84d → 176.24d |

| ID | Task | Start | Finish | Complete | Total float |
| --- | --- | --- | --- | --- | --- |
| 6 | **Public Water Utility Distribution** |  | 2026-12-13 → 2026-12-20 (+7d) |  |  |
| 1 | **Valves/Chamber** |  | 2026-12-13 → 2026-12-20 (+7d) |  |  |
| CON-LEG101-LR-1240 | Installation of Wash out chambers [Local – 05 ] |  | 2026-12-13 → 2026-12-20 (+7d) |  | 208.44d → 202.44d |
| 1 | **Electrical Works** |  | 2027-06-16 → 2027-06-23 (+7d) |  |  |
| 3 | **Low Voltage** |  | 2027-06-16 → 2027-06-23 (+7d) |  |  |
| CON-LEG101-LR-8820 | Installation of Earthing System [Local – 05 ] | 2027-06-15 → 2027-06-22 (+7d) | 2027-06-16 → 2027-06-23 (+7d) |  | 24d → 24.4d |
| 10 | **Telecommunications** |  | 2027-06-16 → 2027-06-23 (+7d) |  |  |
| CON-LEG101-LR-9090 | Installation of Sand encased duct banks for secondary network [Local – 05 ] |  | 2027-06-15 → 2027-06-22 (+7d) |  | 24.2d → 24.6d |
| CON-LEG101-LR-9190 | Installation of Sand and soil encased duct banks, for combined network of primary and secondary [Local – 05 ] |  | 2027-06-16 → 2027-06-23 (+7d) |  | 24.2d → 24.6d |
| 11 | **CCTV feeding system and GSM** |  | 2027-06-28 → 2027-07-05 (+7d) |  |  |
| CON-LEG101-LR-9600 | Installation of Stand rack 42U- 19" [Local – 05 ] | 2027-06-17 → 2027-06-24 (+7d) | 2027-06-20 → 2027-06-27 (+7d) |  | 50.6d → 44.6d |
| CON-LEG101-LR-9810 | Installation of LED Screen 43" (24/7 operation) with Ethernet decoders [Local – 05 ] | 2027-06-27 → 2027-07-04 (+7d) | 2027-06-28 → 2027-07-05 (+7d) |  | 45.6d → 39.6d |
| 12 | **Earthing System** | 2027-08-02 → 2027-08-05 (+3d) | 2027-08-04 → 2027-08-08 (+4d) |  |  |
| CON-LEG101-LR-15150 | Installation of Earthing for Distribution panels,SL feeder pillars, KWH, Unit substations and RMU [Local – 05 ] | 2027-08-02 → 2027-08-05 (+3d) | 2027-08-04 → 2027-08-08 (+4d) |  | 16.2d → 12.7d |
| 9 | **Road Lighting** |  | 2027-08-05 → 2027-08-09 (+4d) |  |  |
| CON-LEG101-LR-7460 | Installation of Unit Substation Including concrete foundations and fencing [Local – 05 ] |  | 2027-07-25 → 2027-07-28 (+3d) |  | 15.2d → 11.7d |
| CON-LEG101-LR-8390 | Installation of Earthing for Streetlighting feeders for every end pole circuits. [Local – 05 ] |  | 2027-08-05 → 2027-08-09 (+4d) |  | 15.2d → 11.7d |
| CON-LEG101-LR-7540 | Installation of Ring Main Unit RMU [Local – 05 ] | 2027-07-25 → 2027-07-28 (+3d) | 2027-08-02 → 2027-08-05 (+3d) |  | 15.2d → 11.7d |
| 6 | **Local – 06** |  | 2027-07-31 → 2027-08-03 (+3d) |  |  |
| 10 | **Telecommunications** |  | 2027-06-16 → 2027-06-23 (+7d) |  |  |
| CON-LEG101-LR-9100 | Installation of Sand encased duct banks for secondary network [Local – 06 ] |  | 2027-06-15 → 2027-06-22 (+7d) |  | 30.05d → 24.8d |
| CON-LEG101-LR-9200 | Installation of Sand and soil encased duct banks, for combined network of primary and secondary [Local – 06 ] |  | 2027-06-16 → 2027-06-23 (+7d) |  | 30.05d → 24.8d |
| 12 | **Earthing System** | 2027-07-27 → 2027-07-31 (+4d) | 2027-07-31 → 2027-08-03 (+3d) |  |  |
| CON-LEG101-LR-15140 | Installation of Earthing for Distribution panels,SL feeder pillars, KWH, Unit substations and RMU [Local – 06 ] | 2027-07-27 → 2027-07-31 (+4d) | 2027-07-31 → 2027-08-03 (+3d) |  | 20.3d → 16.8d |
| 9 | **Road Lighting** |  | 2027-07-29 → 2027-08-02 (+4d) |  |  |
| CON-LEG101-LR-7470 | Installation of Unit Substation Including concrete foundations and fencing [Local – 06 ] |  | 2027-07-22 → 2027-07-26 (+4d) |  | 20.3d → 16.8d |
| CON-LEG101-LR-8400 | Installation of Earthing for Streetlighting feeders for every end pole circuits. [Local – 06 ] |  | 2027-07-29 → 2027-08-02 (+4d) |  | 21.2d → 17.7d |
| CON-LEG101-LR-7550 | Installation of Ring Main Unit RMU [Local – 06 ] | 2027-07-22 → 2027-07-26 (+4d) | 2027-07-27 → 2027-07-31 (+4d) |  | 20.3d → 16.8d |
| 7 | **Local – 07** |  | 2027-08-01 → 2027-08-05 (+4d) |  |  |
| 12 | **Earthing System** | 2027-07-27 → 2027-08-01 (+5d) | 2027-08-01 → 2027-08-05 (+4d) |  |  |
| CON-LEG101-LR-15130 | Installation of Earthing for Distribution panels,SL feeder pillars, KWH, Unit substations and RMU [Local – 07 ] | 2027-07-27 → 2027-08-01 (+5d) | 2027-08-01 → 2027-08-05 (+4d) |  | 18.9d → 15.4d |
| 9 | **Road Lighting** |  | 2027-07-29 → 2027-08-03 (+5d) |  |  |
| CON-LEG101-LR-7480 | Installation of Unit Substation Including concrete foundations and fencing [Local – 07 ] |  | 2027-07-22 → 2027-07-27 (+5d) |  | 18.9d → 15.4d |
| CON-LEG101-LR-8410 | Installation of Earthing for Streetlighting feeders for every end pole circuits. [Local – 07 ] |  | 2027-07-29 → 2027-08-03 (+5d) |  | 20.9d → 17.4d |
| CON-LEG101-LR-7560 | Installation of Ring Main Unit RMU [Local – 07 ] | 2027-07-22 → 2027-07-27 (+5d) | 2027-07-27 → 2027-08-01 (+5d) |  | 18.9d → 15.4d |
| 8 | **Local – 08** |  | 2027-07-29 → 2027-08-03 (+5d) |  |  |
| 5 | **TSE Network** |  | 2026-12-12 → 2026-12-19 (+7d) |  |  |
| 1 | **Valves/Chamber** |  | 2026-12-12 → 2026-12-19 (+7d) |  |  |
| CON-LEG101-LR-2750 | Installation of Air Valve chambers [Local – 08 ] |  | 2026-12-12 → 2026-12-19 (+7d) |  | 191.9d → 186.6d |
| CON-LEG101-LR-2670 | Installation of Wash out chambers [Local – 08 ] |  | 2026-12-10 → 2026-12-17 (+7d) |  | 191.9d → 186.6d |
| 1 | **Electrical Works** |  | 2027-07-04 → 2027-07-11 (+7d) |  |  |
| 3 | **Low Voltage** |  | 2027-07-04 → 2027-07-11 (+7d) |  |  |
| CON-LEG101-LR-8500 | Installation of Low Voltage Distribution Panel [Local – 08 ] | 2027-06-27 → 2027-07-04 (+7d) | 2027-07-04 → 2027-07-11 (+7d) |  | 23d → 17.7d |
| 11 | **CCTV feeding system and GSM** |  | 2027-07-04 → 2027-07-11 (+7d) |  |  |
| CON-LEG101-LR-9820 | Installation of LED Screen 43" (24/7 operation) with Ethernet decoders [Local – 08 ] | 2027-06-27 → 2027-07-04 (+7d) | 2027-07-04 → 2027-07-11 (+7d) |  | 23d → 17.7d |
| 12 | **Earthing System** | 2027-07-27 → 2027-08-01 (+5d) | 2027-07-29 → 2027-08-03 (+5d) |  |  |
| CON-LEG101-LR-8320 | Installation of Earthing for Distribution panels,SL feeder pillars, KWH, Unit substations and RMU [Local – 08 ] | 2027-07-27 → 2027-08-01 (+5d) | 2027-07-29 → 2027-08-03 (+5d) |  | 3.3d → 0.5d |
| 9 | **Road Lighting** |  | 2027-07-29 → 2027-08-03 (+5d) |  |  |
| CON-LEG101-LR-7490 | Installation of Unit Substation Including concrete foundations and fencing [Local – 08 ] |  | 2027-07-22 → 2027-07-26 (+4d) |  | 3.3d → 0.5d |
| CON-LEG101-LR-8470 | Installation of Street Lighting feeder pillars / Lighting panels [Local – 08 ] |  | 2027-07-27 → 2027-08-01 (+5d) |  | 3.3d → 0.5d |
| CON-LEG101-LR-7570 | Installation of Ring Main Unit RMU [Local – 08 ] | 2027-07-22 → 2027-07-26 (+4d) | 2027-07-27 → 2027-07-31 (+4d) |  | 3.3d → 0.5d |
| CON-LEG101-LR-8420 | Installation of Earthing for Streetlighting feeders for every end pole circuits. [Local – 08 ] | 2027-07-27 → 2027-08-01 (+5d) | 2027-07-29 → 2027-08-03 (+5d) |  | 20.9d → 17.4d |
| 3 | **Bridge** |  | 2027-09-04 → 2027-09-05 (+1d) |  |  |
| 3 | **Bridge Finishing** |  | 2027-09-04 → 2027-09-05 (+1d) |  |  |
| CON-LEG101-BR-1210 | Installation of GRP Panel [Bridge ] | 2027-08-11 → 2026-11-09 A (-275d) | 2027-08-23 → 2027-08-24 (+1d) | 0% → 20% |  |
| CON-LEG101-BR-1160 | Membrane waterproofing for concert in touch with soil and membrane waterproofing for bridge slab [Bridge ] | 2026-11-04 → 2026-11-11 (+7d) | 2026-11-15 → 2026-11-22 (+7d) |  | 128.5d → 126d |
| CON-LEG101-BR-1170 | Placing of Protective Coating for Concrete Surfaces [Bridge ] | 2026-11-16 → 2026-11-23 (+7d) | 2026-11-30 → 2026-12-07 (+7d) |  | 128.5d → 126d |
| CON-LEG101-BR-1260 | Asphalt Wearing Cource | 2026-12-01 → 2026-12-08 (+7d) | 2026-12-03 → 2026-12-10 (+7d) |  | 128.5d → 126d |
| CON-LEG101-BR-1190 | Installation of expansion joints for bridges [Bridge ] | 2026-12-05 → 2026-12-12 (+7d) | 2026-12-20 → 2026-12-27 (+7d) |  | 128.5d → 126d |
| CON-LEG101-BR-1200 | Installation of Guard Rail [Bridge ] | 2027-07-19 → 2027-07-24 (+5d) | 2027-08-11 → 2027-08-15 (+4d) |  |  |
| CON-LEG101-BR-1220 | Installation of Logo MODON [Bridge ] | 2027-08-23 → 2027-08-25 (+2d) | 2027-09-04 → 2027-09-05 (+1d) |  |  |
| 4 | **Outside Boundary Area (Tie-in Lines)** |  | 2027-07-04 → 2027-07-11 (+7d) |  |  |
| CON-LEG101-OBA-1150 | Installation of Fiberglass Manholes [Outside Boundary Area ] |  | 2026-11-05 A | 95% → 100% | 208.13d → none |
| 3 | **TSE Network** |  | 2027-07-04 → 2027-07-11 (+7d) |  |  |
| 1 | **Valves/Chamber** |  | 2027-07-04 → 2027-07-11 (+7d) |  |  |
| CON-LEG101-OBA-1070 | Installation of Butterfly valves (In Chamber) [Outside Boundary Area ] |  | 2027-07-04 → 2027-07-11 (+7d) |  | 11.18d → 5.18d |
| CON-LEG101-OBA-1500 | Installation of Valve Chamber [Outside Boundary Area ] |  | 2027-07-04 → 2027-07-11 (+7d) |  | 11.18d → 5.18d |
| 5 | **Public Water Utility Distribution** |  | 2026-11-07 → 2026-11-14 (+7d) |  |  |
| 3 | **Public Water Utility Distribution (0 - 900) m** |  | 2026-11-05 → 2026-11-12 (+7d) |  |  |
| 1 | **Valves/Chamber** |  | 2026-11-05 → 2026-11-12 (+7d) |  |  |

| ID | Task | Start | Finish | Complete | Total float |
| --- | --- | --- | --- | --- | --- |
| CON-LEG101-OBA-1420 | Installation of Air Valve chambers [Outside Boundary Area ] 0 - 900 m |  | 2026-11-05 → 2026-11-12 (+7d) |  | 207.21d → 201.21d |
| CON-LEG101-OBA-1430 | Installation of Air Valves [Outside Boundary Area ] 0 - 900 m |  | 2026-11-05 → 2026-11-12 (+7d) |  | 207.21d → 201.21d |
| 1 | **Public Water Utility Distribution (901 - 1800) m** |  | 2026-11-07 → 2026-11-14 (+7d) |  |  |
| 1 | **Valves/Chamber** |  | 2026-11-07 → 2026-11-14 (+7d) |  |  |
| CON-LEG101-OBA-1440 | Installation of Air Valve chambers [Outside Boundary Area ] 901 - 1800 m |  | 2026-11-05 → 2026-11-12 (+7d) |  | 207.21d → 201.21d |
| CON-LEG101-OBA-1450 | Installation of Air Valves [Outside Boundary Area ] 901 - 1800 m |  | 2026-11-07 → 2026-11-14 (+7d) |  | 207.21d → 201.21d |
| CON-LEG101-OBA-1510 | Installation of Butterfly valves, on pipe with diameter 400 mm |  | 2026-11-07 → 2026-11-14 (+7d) |  | 207.21d → 201.21d |
| 8 | **Roads Finishing** |  | 2027-12-22 → 2027-12-29 (+7d) |  |  |
| 1 | **Local – 01** |  | 2027-11-15 → 2027-11-22 (+7d) |  |  |
| 1 | **LOCAL - 01 Segment-01 (From 0+000 to 1+066)** |  | 2027-10-06 → 2027-10-13 (+7d) |  |  |
| 1 | **Asphalt Wearing Course** |  | 2027-08-10 → 2027-08-17 (+7d) |  |  |
| CON-LEG101-LR-5980 | Tack coat (RC2) [Local – 01 Segment-01] |  | 2027-08-08 → 2027-08-15 (+7d) |  | -55.85d → -61.85d |
| CON-LEG101-LR-6080 | Bituminous wearing course [Local – 01 Segment-01] |  | 2027-08-10 → 2027-08-17 (+7d) |  | -55.85d → -61.85d |
| 5 | **Pavement Markings** | 2027-08-28 → 2027-09-04 (+7d) | 2027-09-15 → 2027-09-22 (+7d) |  |  |
| CON-LEG101-LR-6580 | Pavement Markings (White Paint/Yellow Paint) [Local – 01 Segment-01] | 2027-08-28 → 2027-09-04 (+7d) | 2027-09-04 → 2027-09-11 (+7d) |  | -71.25d → -77.25d |
| CON-LEG101-LR-6680 | Handicap ramp [Local – 01 Segment-01] | 2027-09-04 → 2027-09-11 (+7d) | 2027-09-15 → 2027-09-22 (+7d) |  | -66.25d → -72.25d |
| 6 | **Traffic Signs** |  | 2027-10-06 → 2027-10-13 (+7d) |  |  |
| CON-LEG101-LR-6780 | Installation of Traffic Signs [Local – 01 Segment-01] |  | 2027-10-06 → 2027-10-13 (+7d) |  | -45.05d → -51.05d |
| CON-LEG101-LR-6480 | Retroreflective Plastic Cones [Local – 01 Segment-01] | 2027-09-15 → 2027-09-22 (+7d) | 2027-09-27 → 2027-10-04 (+7d) |  | -65.25d → -71.25d |
| 2 | **LOCAL - 01 Segment-02 (From 1+066 to 2+133)** |  | 2027-10-23 → 2027-10-30 (+7d) |  |  |
| 1 | **Asphalt Wearing Course** |  | 2027-08-14 → 2027-08-21 (+7d) |  |  |
| CON-LEG101-LR-5990 | Tack coat (RC2) [Local – 01 Segment-02] |  | 2027-08-12 → 2027-08-19 (+7d) |  | -47.05d → -49.05d |
| CON-LEG101-LR-6090 | Bituminous wearing course [Local – 01 Segment-02] |  | 2027-08-14 → 2027-08-21 (+7d) |  | -47.05d → -49.05d |
| 5 | **Pavement Markings** | 2027-09-04 → 2027-09-11 (+7d) | 2027-10-04 → 2027-10-11 (+7d) |  |  |
| CON-LEG101-LR-6590 | Pavement Markings (White Paint/Yellow Paint) [Local – 01 Segment-02] | 2027-09-04 → 2027-09-11 (+7d) | 2027-09-21 → 2027-09-29 (+8d) |  | -71.25d → -77.25d |
| CON-LEG101-LR-6690 | Handicap ramp [Local – 01 Segment-02] | 2027-09-21 → 2027-09-29 (+8d) | 2027-10-04 → 2027-10-11 (+7d) |  | -71.25d → -77.25d |
| 6 | **Traffic Signs** |  | 2027-10-23 → 2027-10-30 (+7d) |  |  |
| CON-LEG101-LR-6790 | Installation of Traffic Signs [Local – 01 Segment-02] |  | 2027-10-23 → 2027-10-30 (+7d) |  | -55.45d → -61.45d |
| CON-LEG101-LR-6490 | Retroreflective Plastic Cones [Local – 01 Segment-02] | 2027-10-04 → 2027-10-11 (+7d) | 2027-10-18 → 2027-10-25 (+7d) |  | -71.25d → -77.25d |
| 3 | **LOCAL - 01 Segment-03 (From 2+133 to 3+200)** |  | 2027-11-15 → 2027-11-22 (+7d) |  |  |
| 1 | **Asphalt Wearing Course** |  | 2027-08-15 → 2027-08-22 (+7d) |  |  |
| CON-LEG101-LR-6000 | Tack coat (RC2) [Local – 01 Segment-03] |  | 2027-08-15 → 2027-08-22 (+7d) |  | -47.05d → -49.05d |
| CON-LEG101-LR-6100 | Bituminous wearing course [Local – 01 Segment-03] |  | 2027-08-15 → 2027-08-22 (+7d) |  | -47.05d → -49.05d |
| 5 | **Pavement Markings** | 2027-09-21 → 2027-09-29 (+8d) | 2027-10-18 → 2027-10-25 (+7d) |  |  |
| CON-LEG101-LR-6600 | Pavement Markings (White Paint/Yellow Paint) [Local – 01 Segment-03] | 2027-09-21 → 2027-09-29 (+8d) | 2027-10-04 → 2027-10-11 (+7d) |  | -71.25d → -77.25d |
| CON-LEG101-LR-6700 | Handicap ramp [Local – 01 Segment-03] | 2027-10-04 → 2027-10-11 (+7d) | 2027-10-18 → 2027-10-25 (+7d) |  | -71.25d → -77.25d |
| 6 | **Traffic Signs** |  | 2027-11-15 → 2027-11-22 (+7d) |  |  |
| CON-LEG101-LR-6800 | Installation of Traffic Signs [Local – 01 Segment-03] |  | 2027-11-15 → 2027-11-22 (+7d) |  | -71.25d → -77.25d |
| CON-LEG101-LR-6500 | Retroreflective Plastic Cones [Local – 01 Segment-03] | 2027-10-18 → 2027-10-25 (+7d) | 2027-11-10 → 2027-11-17 (+7d) |  | -71.25d → -77.25d |
| 2 | **Local – 02** |  | 2027-11-13 → 2027-11-20 (+7d) |  |  |
| 4 | **Interlocking block sidewalk/footpath** |  | 2027-08-22 → 2027-08-26 (+4d) |  |  |
| CON-LEG101-LR-6310 | Interlocking block pavers for sidewalk/footpath [Local – 02 ] |  | 2027-08-22 → 2027-08-26 (+4d) | 70% → 80% | 0.65d → -3.25d |
| 5 | **Pavement Markings** | 2027-10-04 → 2027-10-11 (+7d) | 2027-10-27 → 2027-11-03 (+7d) |  |  |
| CON-LEG101-LR-6610 | Pavement Markings (White Paint/Yellow Paint) [Local – 02 ] | 2027-10-04 → 2027-10-11 (+7d) | 2027-10-16 → 2027-10-23 (+7d) |  | -69.25d → -75.25d |
| CON-LEG101-LR-6710 | Handicap ramp [Local – 02 ] | 2027-10-16 → 2027-10-23 (+7d) | 2027-10-27 → 2027-11-03 (+7d) |  | -69.25d → -75.25d |
| 6 | **Traffic Signs** |  | 2027-11-13 → 2027-11-20 (+7d) |  |  |
| CON-LEG101-LR-6810 | Installation of Traffic Signs [Local – 02 ] |  | 2027-11-13 → 2027-11-20 (+7d) |  | -69.25d → -75.25d |
| CON-LEG101-LR-6510 | Retroreflective Plastic Cones [Local – 02 ] | 2027-10-27 → 2027-11-03 (+7d) | 2027-11-08 → 2027-11-15 (+7d) |  | -69.25d → -75.25d |
| 3 | **Local – 03** |  | 2027-10-12 → 2027-10-17 (+5d) |  |  |
| 1 | **Asphalt Wearing Course** | 2027-08-15 → 2026-11-07 (-281d) | 2027-08-21 → 2027-08-23 (+2d) |  |  |
| CON-LEG101-LR-6020 | Tack coat (RC2) [Local – 03 ] | 2027-08-15 → 2026-11-07 A (-281d) | 2027-08-17 → 2027-08-23 (+6d) | 0% → 80% | -47.05d → -49.05d |
| CON-LEG101-LR-6120 | Bituminous wearing course [Local – 03 ] | 2027-08-17 → 2026-11-07 A (-283d) | 2027-08-21 → 2027-08-23 (+2d) | 0% → 80% | -47.05d → -49.05d |
| 5 | **Pavement Markings** | 2027-08-28 → 2027-09-04 (+7d) | 2027-09-20 → 2027-09-28 (+8d) |  |  |
| CON-LEG101-LR-6620 | Pavement Markings (White Paint/Yellow Paint) [Local – 03 ] | 2027-08-28 → 2027-09-04 (+7d) | 2027-09-08 → 2027-09-15 (+7d) |  | -42.05d → -46.05d |
| CON-LEG101-LR-6720 | Handicap ramp [Local – 03 ] | 2027-09-08 → 2027-09-15 (+7d) | 2027-09-20 → 2027-09-28 (+8d) |  | -42.05d → -46.05d |
| 6 | **Traffic Signs** |  | 2027-10-12 → 2027-10-17 (+5d) |  |  |
| CON-LEG101-LR-6820 | Installation of Traffic Signs [Local – 03 ] |  | 2027-10-12 → 2027-10-17 (+5d) | 60% → 70% | -42.05d → -46.05d |
| CON-LEG101-LR-6520 | Retroreflective Plastic Cones [Local – 03 ] | 2027-09-20 → 2027-09-28 (+8d) | 2027-10-03 → 2027-10-10 (+7d) |  | -42.05d → -46.05d |
| 4 | **Local – 04** | 2027-10-03 → 2027-10-10 (+7d) | 2027-12-22 → 2027-12-29 (+7d) |  |  |
| 7 | **Concrete Curb** | 2027-10-03 → 2027-10-10 (+7d) | 2027-10-26 → 2027-11-02 (+7d) |  |  |
| CON-LEG101-LR-6230 | Installation of Precast Concrete Curb [Local – 04 ] | 2027-10-03 → 2027-10-10 (+7d) | 2027-10-26 → 2027-11-02 (+7d) |  | -169d → -147.5d |
| 1 | **Asphalt Wearing Course** | 2027-10-27 → 2027-11-03 (+7d) | 2027-11-01 → 2027-11-08 (+7d) |  |  |
| CON-LEG101-LR-6030 | Tack coat (RC2) [Local – 04 ] | 2027-10-27 → 2027-11-03 (+7d) | 2027-10-28 → 2027-11-04 (+7d) |  | -103.4d → -109.4d |
| CON-LEG101-LR-6130 | Bituminous wearing course [Local – 04 ] | 2027-10-30 → 2027-11-06 (+7d) | 2027-11-01 → 2027-11-08 (+7d) |  | -103.4d → -109.4d |
| 3 | **Interlocking block roads/on-street parking** | 2027-11-02 → 2027-11-09 (+7d) | 2027-11-23 → 2027-11-30 (+7d) |  |  |
| CON-LEG101-LR-6430 | Interlocking block pavers for roads/on-street parking [Local – 04 ] | 2027-11-02 → 2027-11-09 (+7d) | 2027-11-23 → 2027-11-30 (+7d) |  | -97.4d → -103.4d |
| 4 | **Interlocking block sidewalk/footpath** | 2027-11-24 → 2027-12-01 (+7d) | 2027-12-15 → 2027-12-22 (+7d) |  |  |
| CON-LEG101-LR-6330 | Interlocking block pavers for sidewalk/footpath [Local – 04 ] | 2027-11-24 → 2027-12-01 (+7d) | 2027-12-15 → 2027-12-22 (+7d) |  | -97.4d → -103.4d |
| 5 | **Pavement Markings** | 2027-11-02 → 2027-11-09 (+7d) | 2027-11-24 → 2027-12-01 (+7d) |  |  |
| CON-LEG101-LR-6630 | Pavement Markings (White Paint/Yellow Paint) [Local – 04 ] | 2027-11-02 → 2027-11-09 (+7d) | 2027-11-13 → 2027-11-20 (+7d) |  | -103.4d → -109.4d |

| ID | Task | Start | Finish | Complete | Total float |
| --- | --- | --- | --- | --- | --- |
| CON-LEG101-LR-6730 | Handicap ramp [Local – 04 ] | 2027-11-14 → 2027-11-21 (+7d) | 2027-11-24 → 2027-12-01 (+7d) |  | -103.4d → -109.4d |
| 6 | **Traffic Signs** | 2027-11-25 → 2027-12-02 (+7d) | 2027-12-22 → 2027-12-29 (+7d) |  |  |
| CON-LEG101-LR-6530 | Retroreflective Plastic Cones [Local – 04 ] | 2027-11-25 → 2027-12-02 (+7d) | 2027-12-06 → 2027-12-13 (+7d) |  | -103.4d → -109.4d |
| CON-LEG101-LR-6830 | Installation of Traffic Signs [Local – 04 ] | 2027-12-07 → 2027-12-14 (+7d) | 2027-12-22 → 2027-12-29 (+7d) |  | -103.4d → -109.4d |
| 5 | **Local – 05** |  | 2027-12-05 → 2027-12-11 (+6d) |  |  |
| 1 | **Asphalt Wearing Course** |  | 2027-11-02 → 2026-11-07 (-360d) |  |  |
| CON-LEG101-LR-6040 | Tack coat (RC2) [Local – 05 ] |  | 2027-11-02 → 2026-11-07 A (-360d) | 85% → 100% | -87.9d → none |
| CON-LEG101-LR-6140 | Bituminous wearing course [Local – 05 ] |  | 2027-11-02 → 2026-11-07 A (-360d) | 85% → 100% | -87.9d → none |
| 5 | **Pavement Markings** | 2027-11-02 → 2027-11-09 (+7d) | 2027-11-25 → 2027-12-01 (+6d) |  |  |
| CON-LEG101-LR-6640 | Pavement Markings (White Paint/Yellow Paint) [Local – 05 ] | 2027-11-02 → 2027-11-09 (+7d) | 2027-11-14 → 2027-11-20 (+6d) |  | -87.9d → -92.6d |
| CON-LEG101-LR-6740 | Handicap ramp [Local – 05 ] | 2027-11-14 → 2027-11-21 (+7d) | 2027-11-25 → 2027-12-01 (+6d) |  | -87.9d → -92.6d |
| 6 | **Traffic Signs** |  | 2027-12-05 → 2027-12-11 (+6d) |  |  |
| CON-LEG101-LR-6840 | Installation of Traffic Signs [Local – 05 ] |  | 2027-12-05 → 2027-12-11 (+6d) | 75% → 80% | -87.9d → -92.6d |
| CON-LEG101-LR-6540 | Retroreflective Plastic Cones [Local – 05 ] | 2027-11-25 → 2027-12-02 (+7d) | 2027-12-01 → 2027-12-07 (+6d) |  | -87.9d → -92.6d |
| 6 | **Local – 06** |  | 2027-12-05 → 2027-12-09 (+4d) |  |  |
| 5 | **Pavement Markings** | 2027-11-02 → 2027-11-09 (+7d) | 2027-11-25 → 2027-12-01 (+6d) |  |  |
| CON-LEG101-LR-6650 | Pavement Markings (White Paint/Yellow Paint) [Local – 06 ] | 2027-11-02 → 2027-11-09 (+7d) | 2027-11-14 → 2027-11-20 (+6d) |  | -87.9d → -92.4d |
| CON-LEG101-LR-6750 | Handicap ramp [Local – 06 ] | 2027-11-14 → 2027-11-21 (+7d) | 2027-11-25 → 2027-12-01 (+6d) |  | -87.9d → -92.4d |
| 6 | **Traffic Signs** |  | 2027-12-05 → 2027-12-09 (+4d) |  |  |
| CON-LEG101-LR-6850 | Installation of Traffic Signs [Local – 06 ] |  | 2027-12-05 → 2027-12-09 (+4d) | 75% → 80% | -87.9d → -92.4d |
| CON-LEG101-LR-6550 | Retroreflective Plastic Cones [Local – 06 ] | 2027-11-25 → 2027-12-02 (+7d) | 2027-11-30 → 2027-12-06 (+6d) |  | -87.9d → -92.4d |
| 7 | **Local – 07** |  | 2027-11-15 → 2027-11-22 (+7d) |  |  |
| 1 | **Asphalt Wearing Course** |  | 2027-10-28 → 2027-11-04 (+7d) |  |  |
| CON-LEG101-LR-6060 | Tack coat (RC2) [Local – 07 ] |  | 2027-10-27 → 2027-11-03 (+7d) |  | -71.1d → -77.1d |
| CON-LEG101-LR-6160 | Bituminous wearing course [Local – 07 ] |  | 2027-10-28 → 2027-11-04 (+7d) |  | -71.1d → -77.1d |
| 5 | **Pavement Markings** | 2027-10-28 → 2027-11-04 (+7d) | 2027-11-07 → 2027-11-14 (+7d) |  |  |
| CON-LEG101-LR-6660 | Pavement Markings (White Paint/Yellow Paint) [Local – 07 ] | 2027-10-28 → 2027-11-04 (+7d) | 2027-11-02 → 2027-11-09 (+7d) |  | -71.1d → -77.1d |
| CON-LEG101-LR-6760 | Handicap ramp [Local – 07 ] | 2027-11-02 → 2027-11-09 (+7d) | 2027-11-07 → 2027-11-14 (+7d) |  | -71.1d → -77.1d |
| 6 | **Traffic Signs** |  | 2027-11-15 → 2027-11-22 (+7d) |  |  |
| CON-LEG101-LR-6860 | Installation of Traffic Signs [Local – 07 ] |  | 2027-11-15 → 2027-11-22 (+7d) |  | -71.1d → -77.1d |
| CON-LEG101-LR-6560 | Retroreflective Plastic Cones [Local – 07 ] | 2027-11-07 → 2027-11-14 (+7d) | 2027-11-11 → 2027-11-18 (+7d) |  | -71.1d → -77.1d |
| 8 | **Local – 08** |  | 2027-11-16 → 2027-11-22 (+6d) |  |  |
| 7 | **Concrete Curb** |  | 2027-10-30 → 2027-11-06 (+7d) |  |  |
| CON-LEG101-LR-6270 | Installation of Precast Concrete Curb [Local – 08 ] |  | 2027-10-30 → 2027-11-06 (+7d) | 80% → 85% | -72d → -77.3d |
| 4 | **Interlocking block sidewalk/footpath** |  | 2027-11-07 → 2027-11-11 (+4d) |  |  |
| CON-LEG101-LR-6370 | Interlocking block pavers for sidewalk/footpath [Local – 08 ] |  | 2027-11-07 → 2027-11-11 (+4d) | 70% → 75% | -63.5d → -67.75d |
| 5 | **Pavement Markings** | 2027-10-30 → 2027-11-06 (+7d) | 2027-11-08 → 2027-11-15 (+7d) |  |  |
| CON-LEG101-LR-6670 | Pavement Markings (White Paint/Yellow Paint) [Local – 08 ] | 2027-10-30 → 2027-11-06 (+7d) | 2027-11-03 → 2027-11-10 (+7d) |  | -72d → -77.3d |
| CON-LEG101-LR-6770 | Handicap ramp [Local – 08 ] | 2027-11-03 → 2027-11-10 (+7d) | 2027-11-08 → 2027-11-15 (+7d) |  | -72d → -77.3d |
| 6 | **Traffic Signs** |  | 2027-11-16 → 2027-11-22 (+6d) |  |  |
| CON-LEG101-LR-6870 | Installation of Traffic Signs [Local – 08 ] |  | 2027-11-16 → 2027-11-22 (+6d) |  | -72d → -77.3d |
| CON-LEG101-LR-6570 | Retroreflective Plastic Cones [Local – 08 ] | 2027-11-08 → 2027-11-15 (+7d) | 2027-11-13 → 2027-11-20 (+7d) |  | -72d → -77.3d |
| 5 | **Fence and Gate** |  | 2027-12-11 → 2027-12-12 (+1d) |  |  |
| 1 | **Fence and Gate Segment -01 (From 0+000 to 0+671)** |  | 2027-03-06 → 2027-03-13 (+7d) |  |  |
| 1 | **Fence** |  | 2027-03-06 → 2027-03-13 (+7d) |  |  |
| CON-LEG101-FG-1000 | Excavation for Fences [Fence and Gate Segment -01] |  | 2026-11-08 → 2026-11-15 (+7d) |  | 11.68d → 9.28d |
| CON-LEG101-FG-1100 | Lean concrete for Foundation [Fence and Gate Segment -01] |  | 2026-11-12 → 2026-11-19 (+7d) |  | 11.68d → 9.28d |
| CON-LEG101-FG-1150 | Reinforced concrete Structure [Fence and Gate Segment -01] |  | 2026-12-03 → 2026-12-10 (+7d) |  | 11.68d → 9.28d |
| CON-LEG101-FG-1200 | Spraying of bituminous paint waterproofing for R.C foundation [Fence and Gate Segment -01] | 2026-12-03 → 2026-12-10 (+7d) | 2026-12-15 → 2026-12-22 (+7d) |  | 11.68d → 9.28d |
| CON-LEG101-FG-1260 | Embankments to the Fences [Fence and Gate Segment -01] | 2026-12-15 → 2026-12-22 (+7d) | 2026-12-24 → 2026-12-31 (+7d) |  | 11.68d → 9.28d |
| CON-LEG101-FG-1050 | Concrete Works for Ground Beam for Fences [Fence and Gate Segment -01] | 2026-12-24 → 2026-12-31 (+7d) | 2027-01-17 → 2027-01-24 (+7d) |  | 11.68d → 9.28d |
| CON-LEG101-FG-1420 | Plster Works for Fences [Fence and Gate Segment -01] | 2027-01-17 → 2027-01-24 (+7d) | 2027-01-31 → 2027-02-07 (+7d) |  | 11.68d → 9.28d |
| CON-LEG101-FG-1280 | Installation of Metal Fence [Fence and Gate Segment -01] | 2027-01-31 → 2027-02-07 (+7d) | 2027-02-21 → 2027-03-01 (+8d) |  | 11.68d → 9.28d |
| CON-LEG101-FG-1340 | Paint On Cement Plaster [Fence and Gate Segment -01] | 2027-02-21 → 2027-03-01 (+8d) | 2027-03-06 → 2027-03-13 (+7d) |  | 11.68d → 9.28d |
| 2 | **Fence and Gate Segment -02 (From 0+671 to 1+342)** |  | 2027-05-04 → 2027-05-08 (+4d) |  |  |
| 1 | **Fence** |  | 2027-05-04 → 2027-05-08 (+4d) |  |  |
| CON-LEG101-FG-1010 | Excavation for Fences [Fence and Gate Segment -02] |  | 2027-03-09 → 2027-03-16 (+7d) |  | 11.68d → 9.28d |
| CON-LEG101-FG-1110 | Lean concrete for Foundation [Fence and Gate Segment -02] |  | 2027-03-10 → 2027-03-17 (+7d) |  | 11.68d → 9.28d |
| CON-LEG101-FG-1160 | Reinforced concrete Structure [Fence and Gate Segment -02] |  | 2027-03-16 → 2027-03-23 (+7d) |  | 11.68d → 9.28d |
| CON-LEG101-FG-1210 | Spraying of bituminous paint waterproofing for R.C foundation [Fence and Gate Segment -02] |  | 2027-03-18 → 2027-03-25 (+7d) |  | 11.68d → 9.28d |
| CON-LEG101-FG-1330 | Embankments to the Fences [Fence and Gate Segment -02] |  | 2027-03-21 → 2027-03-28 (+7d) |  | 11.68d → 9.28d |
| CON-LEG101-FG-1060 | Concrete Works for Ground Beam for Fences [Fence and Gate Segment -02] |  | 2027-03-27 → 2027-04-03 (+7d) |  | 11.68d → 9.28d |
| CON-LEG101-FG-1290 | Installation of Metal Fence [Fence and Gate Segment -02] |  | 2027-04-20 → 2027-04-27 (+7d) |  | 11.68d → 9.28d |
| CON-LEG101-FG-1350 | Paint On Cement Plaster [Fence and Gate Segment -02] | 2027-04-20 → 2026-11-07 A (-164d) | 2027-05-04 → 2027-05-08 (+4d) | 0% → 20% | 11.68d → 9.28d |
| CON-LEG101-FG-1430 | Plster Works for Fences [Fence and Gate Segment -02] | 2027-03-27 → 2027-04-03 (+7d) | 2027-04-10 → 2027-04-17 (+7d) |  | 11.68d → 9.28d |
| 3 | **Fence and Gate Segment -03 (From 1+342 to 2+014)** |  | 2027-07-03 → 2027-07-06 (+3d) |  |  |
| 1 | **Fence** |  | 2027-05-26 → 2027-05-27 (+1d) |  |  |
| CON-LEG101-FG-1300 | Installation of Metal Fence [Fence and Gate Segment -03] |  | 2027-05-12 → 2027-05-20 (+8d) |  | 11.68d → 9.28d |
| CON-LEG101-FG-1440 | Plster Works for Fences [Fence and Gate Segment -03] |  | 2027-05-12 → 2027-05-19 (+7d) | 40% → 50% | 11.68d → 9.28d |
| CON-LEG101-FG-1360 | Paint On Cement Plaster [Fence and Gate Segment -03] |  | 2027-05-26 → 2027-05-27 (+1d) | 40% → 50% | 44.48d → 43.28d |

| ID | Task | Start | Finish | Complete | Total float |
| --- | --- | --- | --- | --- | --- |
| 2 | **Gate** | 2027-05-12 → 2027-05-20 (+8d) | 2027-07-03 → 2027-07-06 (+3d) |  |  |
| CON-LEG101-FG-1250 | Installation of Main Entrance Motorized Gate [Fence and Gate Segment -03] | 2027-05-12 → 2027-05-20 (+8d) | 2027-06-09 → 2027-06-13 (+4d) |  | 11.68d → 9.28d |
| CON-LEG101-FG-1270 | Installation of Pedestrain Gate [Fence and Gate Segment -03] | 2027-06-09 → 2027-06-13 (+4d) | 2027-07-03 → 2027-07-06 (+3d) |  | 11.68d → 9.28d |
| 4 | **Fence and Gate Segment -04 (From 2+014 to 2+685)** |  | 2027-09-05 → 2027-09-06 (+1d) |  |  |
| 1 | **Fence** |  | 2027-09-05 → 2027-09-06 (+1d) |  |  |
| CON-LEG101-FG-1370 | Paint On Cement Plaster [Fence and Gate Segment -04] |  | 2027-09-05 → 2027-09-06 (+1d) |  | -41.5d → -43d |
| CON-LEG101-FG-1450 | Plster Works for Fences [Fence and Gate Segment -04] |  | 2027-07-04 → 2027-07-11 (+7d) |  | 11.18d → 5.18d |
| 5 | **Fence and Gate Segment -05 (From 2+685 to 3+356)** | 2027-09-05 → 2027-09-06 (+1d) | 2027-12-11 → 2027-12-12 (+1d) |  |  |
| 1 | **Fence** | 2027-09-05 → 2027-09-06 (+1d) | 2027-12-11 → 2027-12-12 (+1d) |  |  |
| CON-LEG101-FG-1040 | Excavation for Fences [Fence and Gate Segment -05] | 2027-09-05 → 2027-09-06 (+1d) | 2027-09-16 → 2027-09-18 (+2d) |  | -41.5d → -43d |
| CON-LEG101-FG-1140 | Lean concrete for Foundation [Fence and Gate Segment -05] | 2027-09-16 → 2027-09-18 (+2d) | 2027-09-21 → 2027-09-22 (+1d) |  | -41.5d → -43d |
| CON-LEG101-FG-1190 | Reinforced concrete Structure [Fence and Gate Segment -05] | 2027-09-21 → 2027-09-22 (+1d) | 2027-10-16 → 2027-10-17 (+1d) |  | -41.5d → -43d |
| CON-LEG101-FG-1240 | Spraying of bituminous paint waterproofing for R.C foundation [Fence and Gate Segment -05] | 2027-10-16 → 2027-10-17 (+1d) | 2027-10-27 → 2027-10-28 (+1d) |  | -41.5d → -43d |
| CON-LEG101-FG-1410 | Embankments to the Fences [Fence and Gate Segment -05] | 2027-10-27 → 2027-10-28 (+1d) | 2027-11-01 → 2027-11-02 (+1d) |  | -41.5d → -43d |
| CON-LEG101-FG-1090 | Concrete Works for Ground Beam for Fences [Fence and Gate Segment -05] | 2027-11-01 → 2027-11-02 (+1d) | 2027-11-18 → 2027-11-20 (+2d) |  | -41.5d → -43d |
| CON-LEG101-FG-1460 | Plster Works for Fences [Fence and Gate Segment -05] | 2027-11-18 → 2027-11-20 (+2d) | 2027-11-25 → 2027-11-27 (+2d) |  | -41.5d → -43d |
| CON-LEG101-FG-1320 | Installation of Metal Fence [Fence and Gate Segment -05] | 2027-11-25 → 2027-11-27 (+2d) | 2027-12-04 → 2027-12-05 (+1d) |  | -41.5d → -43d |
| CON-LEG101-FG-1380 | Paint On Cement Plaster [Fence and Gate Segment -05] | 2027-12-04 → 2027-12-05 (+1d) | 2027-12-11 → 2027-12-12 (+1d) |  | -41.5d → -43d |
| 2 | **Roundabout & Landscape** |  | 2028-05-02 → 2028-04-08 (-24d) |  |  |
| 10 | **Local – 01** |  | 2028-01-13 → 2027-12-27 (-17d) |  |  |
| 1 | **LOCAL - 01 Segment-01 (From 0+000 to 1+066)** |  | 2027-12-14 → 2027-11-27 (-17d) |  |  |
| 3 | **Irrigation Works** |  | 2027-10-28 → 2027-10-11 (-17d) |  |  |
| 1 | **Secondary Irrigation** |  | 2027-10-28 → 2027-10-11 (-17d) |  |  |
| 1 | **Pipe Work** |  | 2027-09-09 → 2027-08-23 (-17d) |  |  |
| CON-LEG101-LR-4940 | Sand bedding for Secondary Irrigation [Local – 01 Segment-01] |  | 2027-08-14 → 2026-11-05 A (-282d) | 50% → 100% | -74.65d → none |
| CON-LEG101-LR-4870 | Excavation for Secondary Irrigation [Local – 01 Segment-01] |  | 2027-08-10 → 2026-11-04 A (-279d) | 50% → 100% | -103.65d → none |
| CON-LEG101-LR-5010 | Installation of Pipe for Secondary Irrigation [Local – 01 Segment-01] |  | 2027-08-19 → 2026-11-05 A (-287d) | 50% → 100% | -74.65d → none |
| CON-LEG101-LR-5080 | Sand Surround for Secondary Irrigation [Local – 01 Segment-01] |  | 2027-08-22 → 2026-11-07 A (-288d) | 50% → 100% | -74.65d → none |
| CON-LEG101-LR-5150 | Installation of Micron Marker Magnetic Tape [Local – 01 Segment-01] |  | 2027-08-28 → 2026-11-08 A (-293d) | 50% → 100% | -74.65d → none |
| CON-LEG101-LR-5210 | Backfilling to Subgrade Elevation [Local – 01 Segment-01] |  | 2027-08-31 → 2026-11-09 A (-295d) | 50% → 100% | -74.65d → none |
| CON-LEG101-LR-5410 | Installation of tubing for risers connections from laterals [Local – 01 Segment-01] |  | 2027-09-09 → 2027-08-23 (-17d) |  | -74.65d → -59.15d |
| 2 | **Valves and Controller** | 2027-09-09 → 2027-08-23 (-17d) | 2027-10-28 → 2027-10-11 (-17d) |  |  |
| CON-LEG101-LR-5270 | Installation of Electrical Solenoid Valve [Local – 01 Segment-01] | 2027-09-09 → 2027-08-23 (-17d) | 2027-09-15 → 2027-08-29 (-17d) |  | -74.65d → -59.15d |
| CON-LEG101-LR-5310 | Installation of quick coupler valve [Local – 01 Segment-01] | 2027-09-15 → 2027-08-29 (-17d) | 2027-09-21 → 2027-09-04 (-17d) |  | -74.65d → -59.15d |
| CON-LEG101-LR-5350 | Installation of a Flush valve [Local – 01 Segment-01] | 2027-09-21 → 2027-09-04 (-17d) | 2027-09-28 → 2027-09-09 (-19d) |  | -74.65d → -59.65d |
| CON-LEG101-LR-5470 | Installation of Advanced Irrigation controller [Local – 01 Segment-01] | 2027-09-28 → 2027-09-09 (-19d) | 2027-10-06 → 2027-09-18 (-18d) |  | -74.65d → -59.65d |
| CON-LEG101-LR-5480 | Install single station decoder for valve connection [Local – 01 Segment-01] | 2027-10-06 → 2027-09-18 (-18d) | 2027-10-14 → 2027-09-27 (-17d) |  | -74.65d → -59.65d |
| CON-LEG101-LR-5520 | Installation of Decoder cables 12 AWG between valves and controllers [Local – 01 Segment-01] | 2027-10-14 → 2027-09-27 (-17d) | 2027-10-28 → 2027-10-11 (-17d) |  | -74.65d → -59.65d |
| 14 | **Curbs and edging** | 2027-10-28 → 2027-10-11 (-17d) | 2027-10-31 → 2027-10-13 (-18d) |  |  |
| CON-LEG101-LR-4790 | Installation of Curbs and edging [Local – 01 Segment-01] | 2027-10-28 → 2027-10-11 (-17d) | 2027-10-31 → 2027-10-13 (-18d) |  | -74.65d → -59.65d |
| 13 | **Landscape** | 2027-10-31 → 2027-10-13 (-18d) | 2027-12-14 → 2027-11-27 (-17d) |  |  |
| CON-LEG101-LR-4580 | Site preparation for Planting Area [Local – 01 Segment-01] | 2027-10-31 → 2027-10-13 (-18d) | 2027-11-10 → 2027-10-24 (-17d) |  | -74.65d → -59.65d |
| CON-LEG101-LR-4650 | Placing Agricutural Soil [Local – 01 Segment-01] | 2027-11-10 → 2027-10-24 (-17d) | 2027-11-21 → 2027-11-03 (-18d) |  | -74.65d → -59.65d |
| CON-LEG101-LR-4720 | Planting Shrubs And Ground Cover [Local – 01 Segment-01] | 2027-11-21 → 2027-11-03 (-18d) | 2027-12-14 → 2027-11-27 (-17d) |  | -48.65d → -33.65d |
| 2 | **LOCAL - 01 Segment-02 (From 1+066 to 2+133)** |  | 2028-01-13 → 2027-12-27 (-17d) |  |  |
| 2 | **Irrigation Works** |  | 2027-12-11 → 2027-11-23 (-18d) |  |  |
| 1 | **Secondary Irrigation** |  | 2027-12-11 → 2027-11-23 (-18d) |  |  |
| 1 | **Pipe Work** |  | 2027-10-09 → 2027-09-15 (-24d) |  |  |
| CON-LEG101-LR-4880 | Excavation for Secondary Irrigation [Local – 01 Segment-02] |  | 2027-09-13 → 2026-11-04 A (-313d) | 50% → 100% | -50.65d → none |
| CON-LEG101-LR-4950 | Sand bedding for Secondary Irrigation [Local – 01 Segment-02] |  | 2027-09-15 → 2026-11-04 A (-315d) | 50% → 100% | -50.65d → none |
| CON-LEG101-LR-5020 | Installation of Pipe for Secondary Irrigation [Local – 01 Segment-02] |  | 2027-09-19 → 2026-11-05 A (-318d) | 50% → 100% | -50.65d → none |
| CON-LEG101-LR-5090 | Sand Surround for Secondary Irrigation [Local – 01 Segment-02] |  | 2027-09-21 → 2026-11-07 A (-318d) | 50% → 100% | -50.65d → none |
| CON-LEG101-LR-5160 | Installation of Micron Marker Magnetic Tape [Local – 01 Segment-02] |  | 2027-09-26 → 2026-11-08 A (-322d) | 50% → 100% | -50.65d → none |
| CON-LEG101-LR-5220 | Backfilling to Subgrade Elevation [Local – 01 Segment-02] |  | 2027-09-28 → 2026-11-09 A (-323d) | 50% → 100% | -50.65d → none |
| CON-LEG101-LR-5420 | Installation of tubing for risers connections from laterals [Local – 01 Segment-02] |  | 2027-10-09 → 2027-09-15 (-24d) |  | -50.65d → -28.5d |
| 2 | **Valves and Controller** | 2027-11-21 → 2027-11-03 (-18d) | 2027-12-11 → 2027-11-23 (-18d) |  |  |
| CON-LEG101-LR-5360 | Installation of a Flush valve [Local – 01 Segment-02] | 2027-11-21 → 2027-11-03 (-18d) | 2027-11-27 → 2027-11-09 (-18d) |  | -74.65d → -59.65d |
| CON-LEG101-LR-5530 | Installation of Decoder cables 12 AWG between valves and controllers [Local – 01 Segment-02] | 2027-11-27 → 2027-11-09 (-18d) | 2027-12-11 → 2027-11-23 (-18d) |  | -74.65d → -59.65d |
| 14 | **Curbs and edging** | 2027-12-11 → 2027-11-23 (-18d) | 2027-12-13 → 2027-11-25 (-18d) |  |  |
| CON-LEG101-LR-4800 | Installation of Curbs and edging [Local – 01 Segment-02] | 2027-12-11 → 2027-11-23 (-18d) | 2027-12-13 → 2027-11-25 (-18d) |  | -74.65d → -59.65d |
| 13 | **Landscape** | 2027-12-13 → 2027-11-25 (-18d) | 2028-01-13 → 2027-12-27 (-17d) |  |  |
| CON-LEG101-LR-4590 | Site preparation for Planting Area [Local – 01 Segment-02] | 2027-12-13 → 2027-11-25 (-18d) | 2027-12-23 → 2027-12-06 (-17d) |  | -74.65d → -59.65d |
| CON-LEG101-LR-4660 | Placing Agricutural Soil [Local – 01 Segment-02] | 2027-12-23 → 2027-12-06 (-17d) | 2028-01-03 → 2027-12-16 (-18d) |  | -74.65d → -59.65d |
| CON-LEG101-LR-4730 | Planting Shrubs And Ground Cover [Local – 01 Segment-02] | 2028-01-03 → 2027-12-16 (-18d) | 2028-01-13 → 2027-12-27 (-17d) |  | -74.65d → -59.65d |
| 3 | **LOCAL - 01 Segment-03 (From 2+133 to 3+200)** |  | 2027-12-09 → 2027-11-13 (-26d) |  |  |
| 2 | **Irrigation Works** |  | 2027-11-10 → 2027-10-10 (-31d) |  |  |
| 1 | **Secondary Irrigation** |  | 2027-11-10 → 2027-10-10 (-31d) |  |  |
| 1 | **Pipe Work** |  | 2027-11-10 → 2027-10-05 (-36d) |  |  |
| CON-LEG101-LR-4890 | Excavation for Secondary Irrigation [Local – 01 Segment-03] |  | 2027-10-11 → 2027-09-16 (-25d) | 50% → 80% | -50.65d → -28.5d |
| CON-LEG101-LR-4960 | Sand bedding for Secondary Irrigation [Local – 01 Segment-03] |  | 2027-10-14 → 2027-09-18 (-26d) | 50% → 80% | -44.65d → -21.5d |

| ID | Task | Start | Finish | Complete | Total float |
| --- | --- | --- | --- | --- | --- |
| CON-LEG101-LR-5030 | Installation of Pipe for Secondary Irrigation [Local – 01 Segment-03] |  | 2027-10-17 → 2027-09-19 (-28d) | 50% → 80% | -44.65d → -21.5d |
| CON-LEG101-LR-5100 | Sand Surround for Secondary Irrigation [Local – 01 Segment-03] |  | 2027-10-21 → 2027-09-21 (-30d) | 50% → 80% | -19.15d → 11.2d |
| CON-LEG101-LR-5170 | Installation of Micron Marker Magnetic Tape [Local – 01 Segment-03] |  | 2027-10-26 → 2027-09-22 (-34d) | 50% → 80% | -19.15d → 11.2d |
| CON-LEG101-LR-5230 | Backfilling to Subgrade Elevation [Local – 01 Segment-03] |  | 2027-10-31 → 2027-09-26 (-35d) | 50% → 80% | -19.15d → 11.2d |
| CON-LEG101-LR-5430 | Installation of tubing for risers connections from laterals [Local – 01 Segment-03] |  | 2027-11-10 → 2027-10-05 (-36d) |  | -19.15d → 11.2d |
| 2 | **Valves and Controller** | 2027-10-17 → 2027-09-19 (-28d) | 2027-11-06 → 2027-10-10 (-27d) |  |  |
| CON-LEG101-LR-5370 | Installation of a Flush valve [Local – 01 Segment-03] | 2027-10-17 → 2027-09-19 (-28d) | 2027-10-23 → 2027-09-26 (-27d) |  | -44.65d → -21.5d |
| CON-LEG101-LR-5540 | Installation of Decoder cables 12 AWG between valves and controllers [Local – 01 Segment-03] | 2027-10-23 → 2027-09-26 (-27d) | 2027-11-06 → 2027-10-10 (-27d) |  | -44.65d → -21.5d |
| 14 | **Curbs and edging** | 2027-11-06 → 2027-10-10 (-27d) | 2027-11-08 → 2027-10-12 (-27d) |  |  |
| CON-LEG101-LR-4810 | Installation of Curbs and edging [Local – 01 Segment-03] | 2027-11-06 → 2027-10-10 (-27d) | 2027-11-08 → 2027-10-12 (-27d) |  | -44.65d → -21.5d |
| 13 | **Landscape** | 2027-11-08 → 2027-10-12 (-27d) | 2027-12-09 → 2027-11-13 (-26d) |  |  |
| CON-LEG101-LR-4600 | Site preparation for Planting Area [Local – 01 Segment-03] | 2027-11-08 → 2027-10-12 (-27d) | 2027-11-18 → 2027-10-23 (-26d) |  | -44.65d → -21.5d |
| CON-LEG101-LR-4670 | Placing Agricutural Soil [Local – 01 Segment-03] | 2027-11-18 → 2027-10-23 (-26d) | 2027-11-29 → 2027-11-02 (-27d) |  | -44.65d → -21.5d |
| CON-LEG101-LR-4740 | Planting Shrubs And Ground Cover [Local – 01 Segment-03] | 2027-11-29 → 2027-11-02 (-27d) | 2027-12-09 → 2027-11-13 (-26d) |  | -44.65d → -21.5d |
| 3 | **Local – 02** |  | 2027-12-16 → 2027-11-18 (-28d) |  |  |
| 3 | **Irrigation Works** |  | 2027-11-22 → 2027-10-25 (-28d) |  |  |
| 1 | **Secondary Irrigation** |  | 2027-11-22 → 2027-10-25 (-28d) |  |  |
| 1 | **Pipe Work** |  | 2027-11-11 → 2027-10-03 (-39d) |  |  |
| CON-LEG101-LR-4900 | Excavation for Secondary Irrigation [Local – 02 ] |  | 2027-10-13 → 2027-09-18 (-25d) | 50% → 85% | -50.65d → -28.5d |
| CON-LEG101-LR-4970 | Sand bedding for Secondary Irrigation [Local – 02 ] |  | 2027-10-16 → 2027-09-18 (-28d) | 50% → 85% | -50.65d → -26.3d |
| CON-LEG101-LR-5040 | Installation of Pipe for Secondary Irrigation [Local – 02 ] |  | 2027-10-18 → 2027-09-19 (-29d) | 50% → 85% | -50.65d → -26.3d |
| CON-LEG101-LR-5110 | Sand Surround for Secondary Irrigation [Local – 02 ] |  | 2027-10-23 → 2027-09-20 (-33d) | 50% → 85% | -20.15d → 13.3d |
| CON-LEG101-LR-5180 | Installation of Micron Marker Magnetic Tape [Local – 02 ] |  | 2027-10-27 → 2027-09-21 (-36d) | 50% → 85% | -20.15d → 13.3d |
| CON-LEG101-LR-5240 | Backfilling to Subgrade Elevation [Local – 02 ] |  | 2027-11-02 → 2027-09-25 (-38d) | 50% → 85% | -20.15d → 13.3d |
| CON-LEG101-LR-5440 | Installation of tubing for risers connections from laterals [Local – 02 ] |  | 2027-11-11 → 2027-10-03 (-39d) |  | -20.15d → 13.3d |
| 2 | **Valves and Controller** | 2027-10-18 → 2027-09-19 (-29d) | 2027-11-22 → 2027-10-25 (-28d) |  |  |
| CON-LEG101-LR-5280 | Installation of Electrical Solenoid Valve [Local – 02 ] | 2027-10-18 → 2027-09-19 (-29d) | 2027-10-24 → 2027-09-26 (-28d) |  | -50.65d → -26.3d |
| CON-LEG101-LR-5320 | Installation of quick coupler valve [Local – 02 ] | 2027-10-24 → 2027-09-26 (-28d) | 2027-10-30 → 2027-10-02 (-28d) |  | -50.65d → -26.3d |
| CON-LEG101-LR-5380 | Installation of a Flush valve [Local – 02 ] | 2027-10-30 → 2027-10-02 (-28d) | 2027-11-03 → 2027-10-06 (-28d) |  | -50.65d → -26.3d |
| CON-LEG101-LR-5490 | Install single station decoder for valve connection [Local – 02 ] | 2027-11-03 → 2027-10-06 (-28d) | 2027-11-11 → 2027-10-14 (-28d) |  | -50.65d → -26.3d |
| CON-LEG101-LR-5550 | Installation of Decoder cables 12 AWG between valves and controllers [Local – 02 ] | 2027-11-11 → 2027-10-14 (-28d) | 2027-11-22 → 2027-10-25 (-28d) |  | -50.65d → -26.3d |
| 14 | **Curbs and edging** | 2027-11-22 → 2027-10-25 (-28d) | 2027-11-25 → 2027-10-28 (-28d) |  |  |
| CON-LEG101-LR-4830 | Installation of Curbs and edging [Local – 02 ] | 2027-11-22 → 2027-10-25 (-28d) | 2027-11-25 → 2027-10-28 (-28d) |  | -50.65d → -26.3d |
| 13 | **Landscape** | 2027-11-25 → 2027-10-28 (-28d) | 2027-12-16 → 2027-11-18 (-28d) |  |  |
| CON-LEG101-LR-4610 | Site preparation for Planting Area [Local – 02 ] | 2027-11-25 → 2027-10-28 (-28d) | 2027-12-02 → 2027-11-04 (-28d) |  | -50.65d → -26.3d |
| CON-LEG101-LR-4680 | Placing Agricutural Soil [Local – 02 ] | 2027-12-02 → 2027-11-04 (-28d) | 2027-12-09 → 2027-11-11 (-28d) |  | -50.65d → -26.3d |
| CON-LEG101-LR-4750 | Planting Shrubs And Ground Cover [Local – 02 ] | 2027-12-09 → 2027-11-11 (-28d) | 2027-12-16 → 2027-11-18 (-28d) |  | -50.65d → -26.3d |
| 5 | **Local – 04** | 2027-10-27 → 2027-11-03 (+7d) | 2027-12-29 → 2028-01-05 (+7d) |  |  |
| 2 | **Irrigation Works** | 2027-10-27 → 2027-11-03 (+7d) | 2027-12-15 → 2027-12-22 (+7d) |  |  |
| 1 | **Secondary Irrigation** | 2027-10-27 → 2027-11-03 (+7d) | 2027-12-15 → 2027-12-22 (+7d) |  |  |
| 1 | **Pipe Work** | 2027-10-27 → 2027-11-03 (+7d) | 2027-11-29 → 2027-12-06 (+7d) |  |  |
| CON-LEG101-LR-4910 | Excavation for Secondary Irrigation [Local – 04 ] | 2027-10-27 → 2027-11-03 (+7d) | 2027-10-30 → 2027-11-06 (+7d) |  | -62d → -68d |
| CON-LEG101-LR-4980 | Sand bedding for Secondary Irrigation [Local – 04 ] | 2027-10-31 → 2027-11-07 (+7d) | 2027-11-06 → 2027-11-13 (+7d) |  | -62d → -68d |
| CON-LEG101-LR-5050 | Installation of Pipe for Secondary Irrigation [Local – 04 ] | 2027-11-07 → 2027-11-14 (+7d) | 2027-11-15 → 2027-11-22 (+7d) |  | -62d → -68d |
| CON-LEG101-LR-5120 | Sand Surround for Secondary Irrigation [Local – 04 ] | 2027-11-16 → 2027-11-23 (+7d) | 2027-11-18 → 2027-11-25 (+7d) |  | -62d → -68d |
| CON-LEG101-LR-5190 | Installation of Micron Marker Magnetic Tape [Local – 04 ] | 2027-11-20 → 2027-11-27 (+7d) | 2027-11-24 → 2027-12-01 (+7d) |  | -62d → -68d |
| CON-LEG101-LR-5250 | Backfilling to Subgrade Elevation [Local – 04 ] | 2027-11-25 → 2027-12-02 (+7d) | 2027-11-27 → 2027-12-04 (+7d) |  | -62d → -68d |
| CON-LEG101-LR-5450 | Installation of tubing for risers connections from laterals [Local – 04 ] | 2027-11-28 → 2027-12-05 (+7d) | 2027-11-29 → 2027-12-06 (+7d) |  | -62d → -68d |
| 2 | **Valves and Controller** | 2027-11-16 → 2027-11-23 (+7d) | 2027-12-15 → 2027-12-22 (+7d) |  |  |
| CON-LEG101-LR-5290 | Installation of Electrical Solenoid Valve [Local – 04 ] | 2027-11-16 → 2027-11-23 (+7d) | 2027-11-22 → 2027-11-29 (+7d) |  | -62d → -68d |
| CON-LEG101-LR-5330 | Installation of quick coupler valve [Local – 04 ] | 2027-11-23 → 2027-11-30 (+7d) | 2027-11-29 → 2027-12-06 (+7d) |  | -62d → -68d |
| CON-LEG101-LR-5390 | Installation of a Flush valve [Local – 04 ] | 2027-11-30 → 2027-12-07 (+7d) | 2027-12-05 → 2027-12-12 (+7d) |  | -62d → -68d |
| CON-LEG101-LR-5500 | Install single station decoder for valve connection [Local – 04 ] | 2027-12-06 → 2027-12-13 (+7d) | 2027-12-13 → 2027-12-20 (+7d) |  | -62d → -68d |
| CON-LEG101-LR-5560 | Installation of Decoder cables 12 AWG between valves and controllers [Local – 04 ] | 2027-12-14 → 2027-12-21 (+7d) | 2027-12-15 → 2027-12-22 (+7d) |  | -62d → -68d |
| 14 | **Curbs and edging** | 2027-12-16 → 2027-12-23 (+7d) | 2027-12-19 → 2027-12-26 (+7d) |  |  |
| CON-LEG101-LR-4840 | Installation of Curbs and edging [Local – 04 ] | 2027-12-16 → 2027-12-23 (+7d) | 2027-12-19 → 2027-12-26 (+7d) |  | -62d → -68d |
| 13 | **Landscape** | 2027-12-20 → 2027-12-27 (+7d) | 2027-12-29 → 2028-01-05 (+7d) |  |  |
| CON-LEG101-LR-4620 | Site preparation for Planting Area [Local – 04 ] | 2027-12-20 → 2027-12-27 (+7d) | 2027-12-22 → 2027-12-29 (+7d) |  | -62d → -68d |
| CON-LEG101-LR-4690 | Placing Agricutural Soil [Local – 04 ] | 2027-12-23 → 2027-12-30 (+7d) | 2027-12-26 → 2028-01-02 (+7d) |  | -62d → -68d |
| CON-LEG101-LR-4760 | Planting Shrubs And Ground Cover [Local – 04 ] | 2027-12-27 → 2028-01-03 (+7d) | 2027-12-29 → 2028-01-05 (+7d) |  | -62d → -68d |
| CON-LEG101-LR-4920 | Excavation for Secondary Irrigation [Local – 06 ] |  | 2027-10-28 → 2027-11-03 (+6d) | 40% → 75% | -56.2d → -56.25d |
| CON-LEG101-LR-5060 | Installation of Pipe for Secondary Irrigation [Local – 06 ] |  | 2027-10-31 → 2027-11-04 (+4d) | 40% → 75% | -56.2d → -56.25d |
| CON-LEG101-LR-5260 | Backfilling to Subgrade Elevation [Local – 06 ] |  | 2027-11-02 → 2027-11-06 (+4d) | 40% → 75% | -56.2d → -56.25d |
| CON-LEG101-LR-5460 | Installation of tubing for risers connections from laterals [Local – 06 ] |  |  | 40% → 75% | -56.2d → -56.25d |
| 1 | **Roundabout - 01 (L01 & L04)** | 2027-10-27 → 2026-11-02 (-359d) | 2028-04-22 → 2028-04-08 (-14d) |  |  |
| 1 | **Irrigation Works** | 2027-10-27 → 2026-11-02 (-359d) | 2028-02-15 → 2028-01-18 (-28d) |  |  |
| 1 | **Secondary Irrigation** | 2027-10-27 → 2026-11-02 (-359d) | 2028-02-15 → 2028-01-18 (-28d) |  |  |
| 1 | **Pipe Work** | 2027-10-27 → 2026-11-02 (-359d) | 2028-02-15 → 2027-12-28 (-49d) |  |  |
| CON-LEG101-RA-1120 | Excavation for Secondary Irrigation [Roundabout : 01 ] | 2027-10-27 → 2026-11-02 A (-359d) | 2027-11-08 → 2027-11-09 (+1d) | 0% → 50% | -169d → -147.5d |
| CON-LEG101-RA-1150 | Sand bedding for Secondary Irrigation [Roundabout : 01 ] | 2027-11-09 → 2026-11-03 A (-371d) | 2027-11-21 → 2027-11-15 (-6d) | 0% → 50% | -169d → -147.5d |

| ID | Task | Start | Finish | Complete | Total float |
| --- | --- | --- | --- | --- | --- |
| CON-LEG101-RA-1180 | Installation of Pipe for Secondary Irrigation [Roundabout : 01 ] | 2027-11-22 → 2026-11-04 A (-383d) | 2027-12-04 → 2027-11-22 (-12d) | 0% → 50% | -169d → -147.5d |
| CON-LEG101-RA-1210 | Sand Surround for Secondary Irrigation [Roundabout : 01 ] | 2027-12-05 → 2026-11-05 A (-395d) | 2027-12-20 → 2027-11-30 (-20d) | 0% → 50% | -160d → -118d |
| CON-LEG101-RA-1240 | Installation of Micron Marker Magnetic Tape [Roundabout : 01 ] | 2027-12-21 → 2026-11-07 A (-409d) | 2028-01-05 → 2027-12-08 (-28d) | 0% → 50% | -160d → -118d |
| CON-LEG101-RA-1270 | Backfilling to Subgrade Elevation [Roundabout : 01 ] | 2028-01-06 → 2026-11-07 A (-425d) | 2028-01-22 → 2027-12-16 (-37d) | 0% → 50% | -160d → -118d |
| CON-LEG101-RA-1390 | Installation of tubing for risers connections from laterals [Roundabout : 01 ] | 2028-01-23 → 2026-11-08 A (-441d) | 2028-02-15 → 2027-12-28 (-49d) | 0% → 50% | -160d → -118d |
| 2 | **Valves and Controller** | 2027-12-05 → 2027-11-22 (-13d) | 2028-01-30 → 2028-01-18 (-12d) |  |  |
| CON-LEG101-RA-1300 | Installation of Electrical Solenoid Valve [Roundabout : 01 ] | 2027-12-05 → 2027-11-22 (-13d) | 2027-12-09 → 2027-11-28 (-11d) |  | -169d → -147.5d |
| CON-LEG101-RA-1330 | Installation of quick coupler valve [Roundabout : 01 ] | 2027-12-11 → 2027-11-28 (-13d) | 2027-12-15 → 2027-12-04 (-11d) |  | -169d → -147.5d |
| CON-LEG101-RA-1360 | Installation of a Flush valve [Roundabout : 01 ] | 2027-12-16 → 2027-12-04 (-12d) | 2027-12-28 → 2027-12-16 (-12d) |  | -169d → -147.5d |
| CON-LEG101-RA-1420 | Install single station decoder for valve connection [Roundabout : 01 ] | 2027-12-29 → 2027-12-16 (-13d) | 2028-01-13 → 2028-01-02 (-11d) |  | -158d → -147.5d |
| A | Catch | 2028-01-15 → 2028-01-02 (-13d) | 2028-01-30 → 2028-01-18 (-12d) |  | -158d → -147.5d |
| 3 | **Curbs and edging** | 2028-01-31 → 2028-01-18 (-13d) | 2028-02-13 → 2028-02-01 (-12d) |  |  |
| CON-LEG101-RA-1090 | Installation of Curbs and edging [Roundabout : 01 ] | 2028-01-31 → 2028-01-18 (-13d) | 2028-02-13 → 2028-02-01 (-12d) |  | -158d → -147.5d |
| 2 | **Landscape** | 2028-02-16 → 2028-02-01 (-15d) | 2028-04-22 → 2028-04-08 (-14d) |  |  |
| CON-LEG101-RA-1000 | Site preparation for Planting Area [Roundabout : 01 ] | 2028-02-16 → 2028-02-01 (-15d) | 2028-03-08 → 2028-02-23 (-14d) |  | -160d → -147.5d |
| CON-LEG101-RA-1030 | Placing Agricutural Soil [Roundabout : 01 ] | 2028-03-09 → 2028-02-23 (-15d) | 2028-03-30 → 2028-03-16 (-14d) |  | -160d → -147.5d |
| CON-LEG101-RA-1060 | Planting Shrubs And Ground Cover [Roundabout : 01 ] | 2028-04-01 → 2028-03-16 (-16d) | 2028-04-22 → 2028-04-08 (-14d) |  | -160d → -147.5d |
| 4 | **Roundabout - 02 (L01 & L03)** | 2027-12-29 → 2026-11-01 (-423d) | 2028-05-02 → 2028-03-25 (-38d) |  |  |
| 1 | **Irrigation Works** | 2027-12-29 → 2026-11-01 (-423d) | 2028-04-18 → 2028-02-15 (-63d) |  |  |
| 1 | **Secondary Irrigation** | 2027-12-29 → 2026-11-01 (-423d) | 2028-04-18 → 2028-02-15 (-63d) |  |  |
| 1 | **Pipe Work** | 2027-12-29 → 2026-11-01 (-423d) | 2028-04-18 → 2028-01-19 (-90d) |  |  |
| CON-LEG101-RA-1130 | Excavation for Secondary Irrigation [Roundabout : 02 ] | 2027-12-29 → 2026-11-01 A (-423d) | 2028-01-10 → 2027-12-20 (-21d) | 0% → 70% | -169d → -135.4d |
| CON-LEG101-RA-1160 | Sand bedding for Secondary Irrigation [Roundabout : 02 ] | 2028-01-11 → 2026-11-02 A (-435d) | 2028-01-23 → 2027-12-25 (-29d) | 0% → 70% | -169d → -135.4d |
| CON-LEG101-RA-1190 | Installation of Pipe for Secondary Irrigation [Roundabout : 02 ] | 2028-01-24 → 2026-11-03 A (-447d) | 2028-02-05 → 2027-12-28 (-39d) | 0% → 70% | -169d → -135.4d |
| CON-LEG101-RA-1220 | Sand Surround for Secondary Irrigation [Roundabout : 02 ] | 2028-02-06 → 2026-11-04 A (-459d) | 2028-02-21 → 2028-01-02 (-50d) | 0% → 70% | -157d → -79.3d |
| CON-LEG101-RA-1250 | Installation of Micron Marker Magnetic Tape [Roundabout : 02 ] | 2028-02-22 → 2026-11-05 A (-474d) | 2028-03-08 → 2028-01-06 (-62d) | 0% → 70% | -157d → -79.3d |
| CON-LEG101-RA-1280 | Backfilling to Subgrade Elevation [Roundabout : 02 ] | 2028-03-09 → 2026-11-07 A (-488d) | 2028-03-25 → 2028-01-11 (-74d) | 0% → 70% | -157d → -79.3d |
| CON-LEG101-RA-1400 | Installation of tubing for risers connections from laterals [Roundabout : 02 ] | 2028-03-26 → 2026-11-09 A (-503d) | 2028-04-18 → 2028-01-19 (-90d) | 0% → 70% | -157d → -79.3d |
| 2 | **Valves and Controller** | 2028-02-06 → 2027-12-28 (-40d) | 2028-03-25 → 2028-02-15 (-39d) |  |  |
| CON-LEG101-RA-1310 | Installation of Electrical Solenoid Valve [Roundabout : 02 ] | 2028-02-06 → 2027-12-28 (-40d) | 2028-02-10 → 2028-01-03 (-38d) |  | -169d → -135.4d |
| CON-LEG101-RA-1340 | Installation of quick coupler valve [Roundabout : 02 ] | 2028-02-12 → 2028-01-03 (-40d) | 2028-02-16 → 2028-01-09 (-38d) |  | -169d → -135.4d |
| CON-LEG101-RA-1370 | Installation of a Flush valve [Roundabout : 02 ] | 2028-02-17 → 2028-01-09 (-39d) | 2028-02-29 → 2028-01-22 (-38d) |  | -169d → -135.4d |
| CON-LEG101-RA-1430 | Install single station decoder for valve connection [Roundabout : 02 ] | 2028-03-01 → 2028-01-22 (-39d) | 2028-03-08 → 2028-01-30 (-38d) |  | -169d → -135.4d |
| CON-LEG101-RA-1460 | Installation of Decoder cables 12 AWG between valves and controllers [Roundabout : 02 ] | 2028-03-09 → 2028-01-30 (-39d) | 2028-03-25 → 2028-02-15 (-39d) |  | -169d → -135.4d |
| 3 | **Curbs and edging** | 2028-03-26 → 2028-02-15 (-40d) | 2028-03-28 → 2028-02-19 (-38d) |  |  |
| CON-LEG101-RA-1100 | Installation of Curbs and edging [Roundabout : 02 ] | 2028-03-26 → 2028-02-15 (-40d) | 2028-03-28 → 2028-02-19 (-38d) |  | -169d → -135.4d |
| 2 | **Landscape** | 2028-03-29 → 2028-02-19 (-39d) | 2028-05-02 → 2028-03-25 (-38d) |  |  |
| CON-LEG101-RA-1010 | Site preparation for Planting Area [Roundabout : 02 ] | 2028-03-29 → 2028-02-19 (-39d) | 2028-04-09 → 2028-03-01 (-39d) |  | -169d → -135.4d |
| CON-LEG101-RA-1040 | Placing Agricutural Soil [Roundabout : 02 ] | 2028-04-10 → 2028-03-01 (-40d) | 2028-04-20 → 2028-03-13 (-38d) |  | -169d → -135.4d |
| CON-LEG101-RA-1070 | Planting Shrubs And Ground Cover [Roundabout : 02 ] | 2028-04-22 → 2028-03-13 (-40d) | 2028-05-02 → 2028-03-25 (-38d) |  | -169d → -135.4d |
| 2 | **Roundabout - 03 (L03 & L05)** |  | 2028-04-13 → 2028-03-14 (-30d) |  |  |
| 1 | **Irrigation Works** |  | 2028-03-18 → 2028-02-16 (-31d) |  |  |
| 1 | **Secondary Irrigation** |  | 2028-03-18 → 2028-02-16 (-31d) |  |  |
| 1 | **Pipe Work** |  | 2028-02-28 → 2028-01-13 (-46d) |  |  |
| CON-LEG101-RA-1140 | Excavation for Secondary Irrigation [Roundabout : 03 ] |  | 2028-01-17 → 2027-12-23 (-25d) | 50% → 75% | -153d → -126.8d |
| CON-LEG101-RA-1170 | Sand bedding for Secondary Irrigation [Roundabout : 03 ] |  | 2028-01-23 → 2027-12-27 (-27d) | 50% → 75% | -153d → -126.8d |
| CON-LEG101-RA-1200 | Installation of Pipe for Secondary Irrigation [Roundabout : 03 ] |  | 2028-01-29 → 2027-12-29 (-31d) | 50% → 75% | -153d → -126.8d |
| CON-LEG101-RA-1230 | Sand Surround for Secondary Irrigation [Roundabout : 03 ] |  | 2028-02-05 → 2028-01-02 (-34d) | 50% → 75% | -114d → -74.8d |
| CON-LEG101-RA-1260 | Installation of Micron Marker Magnetic Tape [Roundabout : 03 ] |  | 2028-02-10 → 2028-01-05 (-36d) | 50% → 75% | -114d → -74.8d |
| CON-LEG101-RA-1290 | Backfilling to Subgrade Elevation [Roundabout : 03 ] |  | 2028-02-17 → 2028-01-09 (-39d) | 50% → 75% | -114d → -74.8d |
| CON-LEG101-RA-1410 | Installation of tubing for risers connections from laterals [Roundabout : 03 ] |  | 2028-02-28 → 2028-01-13 (-46d) | 50% → 75% | -114d → -74.8d |
| 2 | **Valves and Controller** | 2028-01-30 → 2027-12-29 (-32d) | 2028-03-18 → 2028-02-16 (-31d) |  |  |
| CON-LEG101-RA-1320 | Installation of Electrical Solenoid Valve [Roundabout : 03 ] | 2028-01-30 → 2027-12-29 (-32d) | 2028-02-03 → 2028-01-04 (-30d) |  | -153d → -126.8d |
| CON-LEG101-RA-1350 | Installation of quick coupler valve [Roundabout : 03 ] | 2028-02-05 → 2028-01-04 (-32d) | 2028-02-09 → 2028-01-10 (-30d) |  | -153d → -126.8d |
| CON-LEG101-RA-1380 | Installation of a Flush valve [Roundabout : 03 ] | 2028-02-10 → 2028-01-10 (-31d) | 2028-02-22 → 2028-01-23 (-30d) |  | -153d → -126.8d |
| CON-LEG101-RA-1440 | Install single station decoder for valve connection [Roundabout : 03 ] | 2028-02-23 → 2028-01-23 (-31d) | 2028-03-01 → 2028-01-31 (-30d) |  | -153d → -126.8d |
| CON-LEG101-RA-1470 | Installation of Decoder cables 12 AWG between valves and controllers [Roundabout : 03 ] | 2028-03-02 → 2028-01-31 (-31d) | 2028-03-18 → 2028-02-16 (-31d) |  | -153d → -126.8d |
| 3 | **Curbs and edging** | 2028-03-19 → 2028-02-16 (-32d) | 2028-03-21 → 2028-02-20 (-30d) |  |  |
| CON-LEG101-RA-1110 | Installation of Curbs and edging [Roundabout : 03 ] | 2028-03-19 → 2028-02-16 (-32d) | 2028-03-21 → 2028-02-20 (-30d) |  | -153d → -126.8d |
| 2 | **Landscape** | 2028-03-22 → 2028-02-20 (-31d) | 2028-04-13 → 2028-03-14 (-30d) |  |  |
| CON-LEG101-RA-1020 | Site preparation for Planting Area [Roundabout : 03 ] | 2028-03-22 → 2028-02-20 (-31d) | 2028-03-29 → 2028-02-28 (-30d) |  | -153d → -126.8d |
| CON-LEG101-RA-1050 | Placing Agricutural Soil [Roundabout : 03 ] | 2028-03-30 → 2028-02-28 (-31d) | 2028-04-05 → 2028-03-06 (-30d) |  | -153d → -126.8d |
| CON-LEG101-RA-1080 | Planting Shrubs And Ground Cover [Roundabout : 03 ] | 2028-04-06 → 2028-03-06 (-31d) | 2028-04-13 → 2028-03-14 (-30d) |  | -153d → -126.8d |
| 6 | **Testing & Commissioning** |  | 2028-05-10 → 2028-04-16 (-24d) |  |  |
| CON-LEG101-TC-1020 | Test for Public Water Utility Distribution |  | 2027-12-27 → 2028-01-03 (+7d) |  | -95d → -101d |
| CON-LEG101-TC-1030 | Test for TSE Network |  | 2028-01-10 → 2028-01-17 (+7d) |  | -86.4d → -92.4d |
| CON-LEG101-TC-1040 | Test for Sanitary Sewerage |  | 2027-12-28 → 2028-01-04 (+7d) |  | -91.4d → -97.4d |
| CON-LEG101-TC-1050 | Test for Stormwater Utilities |  | 2027-12-30 → 2028-01-06 (+7d) |  | -91.4d → -97.4d |
| CON-LEG101-TC-1060 | Test for Bridge Work |  | 2028-01-03 → 2028-01-10 (+7d) |  | -86.4d → -92.4d |
| CON-LEG101-TC-1080 | Test for Fence & Gate |  | 2027-12-13 → 2027-12-14 (+1d) |  | -41.5d → -43d |

| ID | Task | Start | Finish | Total float |
| --- | --- | --- | --- | --- |
| CON-LEG101-TC-1000 | Test for Telecommunications Work |  | 2028-01-19 → 2028-01-26 (+7d) | -82.2d → -88.2d |
| CON-LEG101-TC-1010 | Test for Electrical Network |  | 2028-01-08 → 2028-01-15 (+7d) | -86.4d → -92.4d |
| CON-LEG101-TC-1070 | Test for CCTV feeding system and GSM |  | 2028-01-23 → 2028-01-30 (+7d) | -80d → -86d |
| CON-LEG101-TC-1100 | Test for Road Lighting |  | 2028-01-13 → 2028-01-20 (+7d) | -82.2d → -88.2d |
| CON-LEG101-TC-1110 | Test for Road Works |  | 2027-12-26 → 2028-01-02 (+7d) | -103.4d → -109.4d |
| CON-LEG101-TC-1120 | Test for Earthing System |  | 2028-01-27 → 2028-02-03 (+7d) | -80d → -86d |
| CON-LEG101-TC-1090 | Test for Irrigation and Landscape | 2028-05-03 → 2028-04-08 (-25d) | 2028-05-10 → 2028-04-16 (-24d) | -169d → -147.5d |
| 7 | **Project Close-out** | 2027-12-13 → 2027-12-15 (+2d) | 2028-06-03 → 2028-05-09 (-25d) |  |
| 1 | **As-Built DWGs** | 2027-12-13 → 2027-12-15 (+2d) | 2028-05-22 → 2028-04-27 (-25d) |  |
| 1 | **As-Built DWGs Submittal** | 2027-12-13 → 2027-12-15 (+2d) | 2028-05-16 → 2028-04-22 (-24d) |  |
| CON-LEG101-ABS-1080 | As-Built DWGs Submittal for Fence & Gate | 2027-12-13 → 2027-12-15 (+2d) | 2027-12-20 → 2027-12-21 (+1d) | -41.5d → -43d |
| CON-LEG101-ABS-1110 | As-Built DWGs Submittal for Road Works | 2027-12-26 → 2028-01-02 (+7d) | 2028-01-09 → 2028-01-16 (+7d) | -103.4d → -109.4d |
| CON-LEG101-ABS-1020 | As-Built DWGs Submittal for Public Water Utility Distribution | 2027-12-28 → 2028-01-04 (+7d) | 2028-01-10 → 2028-01-17 (+7d) | -95d → -101d |
| CON-LEG101-ABS-1050 | As-Built DWGs Submittal for Stormwater Utilities | 2027-12-30 → 2028-01-06 (+7d) | 2028-01-13 → 2028-01-20 (+7d) | -91.4d → -97.4d |
| CON-LEG101-ABS-1060 | As-Built DWGs Submittal for Bridge Work | 2028-01-03 → 2028-01-10 (+7d) | 2028-01-17 → 2028-01-24 (+7d) | -80.2d → -86.2d |
| CON-LEG101-ABS-1030 | As-Built DWGs Submittal for TSE Network | 2028-01-10 → 2028-01-17 (+7d) | 2028-01-24 → 2028-01-31 (+7d) | -86.4d → -92.4d |
| CON-LEG101-ABS-1040 | As-Built DWGs Submittal for Sanitary Sewerage | 2028-01-13 → 2028-01-20 (+7d) | 2028-01-27 → 2028-02-03 (+7d) | -91.4d → -97.4d |
| CON-LEG101-ABS-1100 | As-Built DWGs Submittal for Road Lighting | 2028-01-15 → 2028-01-22 (+7d) | 2028-01-27 → 2028-02-03 (+7d) | -80d → -86d |
| CON-LEG101-ABS-1000 | As-Built DWGs Submittal for Telecommunications Work | 2028-01-19 → 2028-01-26 (+7d) | 2028-02-02 → 2028-02-09 (+7d) | -82.2d → -88.2d |
| CON-LEG101-ABS-1070 | As-Built DWGs Submittal for CCTV feeding system and GSM | 2028-01-23 → 2028-01-30 (+7d) | 2028-02-01 → 2028-02-08 (+7d) | -78.8d → -84.8d |
| CON-LEG101-ABS-1010 | As-Built DWGs Submittal for Electrical Network | 2028-01-27 → 2028-02-03 (+7d) | 2028-02-10 → 2028-02-17 (+7d) | -91.4d → -97.4d |
| CON-LEG101-ABS-1120 | As-Built DWGs Submittal for Earthing System | 2028-01-29 → 2028-02-05 (+7d) | 2028-02-02 → 2028-02-09 (+7d) | -80d → -86d |
| CON-LEG101-ABS-1090 | As-Built DWGs Submittal for Irrigation and Landscape | 2028-05-11 → 2028-04-16 (-25d) | 2028-05-16 → 2028-04-22 (-24d) | -169d → -147.5d |
| 2 | **As-Built DWGs Approval** | 2027-12-20 → 2027-12-22 (+2d) | 2028-05-22 → 2028-04-27 (-25d) |  |
| CON-LEG101-ABA-1080 | As- Built DWGs Approval for Fence & Gate | 2027-12-20 → 2027-12-22 (+2d) | 2027-12-26 → 2027-12-27 (+1d) | -41.5d → -43d |
| CON-LEG101-ABA-1110 | As- Built DWGs Approval for Road Works | 2028-01-09 → 2028-01-16 (+7d) | 2028-01-20 → 2028-01-27 (+7d) | -103.4d → -109.4d |
| CON-LEG101-ABA-1020 | As- Built DWGs Approval for Public Water Utility Distribution | 2028-01-20 → 2028-01-27 (+7d) | 2028-02-01 → 2028-02-08 (+7d) | -103.4d → -109.4d |
| CON-LEG101-ABA-1030 | As- Built DWGs Approval for TSE Network | 2028-01-24 → 2028-01-31 (+7d) | 2028-02-05 → 2028-02-12 (+7d) | -86.4d → -92.4d |
| CON-LEG101-ABA-1100 | As- Built DWGs Approval for Road Lighting | 2028-01-29 → 2028-02-05 (+7d) | 2028-02-08 → 2028-02-15 (+7d) | -80d → -86d |
| CON-LEG101-ABA-1050 | As- Built DWGs Approval for Stormwater Utilities | 2028-02-01 → 2028-02-08 (+7d) | 2028-02-13 → 2028-02-20 (+7d) | -103.4d → -109.4d |
| CON-LEG101-ABA-1070 | As- Built DWGs Approval for CCTV feeding system and GSM | 2028-02-01 → 2028-02-08 (+7d) | 2028-02-07 → 2028-02-14 (+7d) | -78.8d → -84.8d |
| CON-LEG101-ABA-1000 | As- Built DWGs Approval for Telecommunications Work | 2028-02-02 → 2028-02-09 (+7d) | 2028-02-12 → 2028-02-19 (+7d) | -82.2d → -88.2d |
| CON-LEG101-ABA-1120 | As- Built DWGs Approval for Earthing System | 2028-02-03 → 2028-02-10 (+7d) | 2028-02-08 → 2028-02-15 (+7d) | -80d → -86d |
| CON-LEG101-ABA-1060 | As- Built DWGs Approval for Bridge Work | 2028-02-13 → 2028-02-20 (+7d) | 2028-02-24 → 2028-03-02 (+7d) | -103.4d → -109.4d |
| CON-LEG101-ABA-1010 | As- Built DWGs Approval for Electrical Network | 2028-02-24 → 2028-03-02 (+7d) | 2028-03-07 → 2028-03-14 (+7d) | -103.4d → -109.4d |
| CON-LEG101-ABA-1040 | As- Built DWGs Approval for Sanitary Sewerage | 2028-02-24 → 2028-03-02 (+7d) | 2028-03-07 → 2028-03-14 (+7d) | -103.4d → -109.4d |
| CON-LEG101-ABA-1090 | As- Built DWGs Approval for Irrigation and Landscape | 2028-05-17 → 2028-04-22 (-25d) | 2028-05-22 → 2028-04-27 (-25d) | -169d → -147.5d |
| 2 | **Demobilization** | 2028-05-23 → 2028-04-27 (-26d) | 2028-06-03 → 2028-05-09 (-25d) |  |
| CON-LEG101-DM-1000 | Demobilization of Manpower | 2028-05-23 → 2028-04-27 (-26d) | 2028-05-28 → 2028-05-03 (-25d) | -169d → -147.5d |
| CON-LEG101-DM-1010 | Removal of Equipment from Site | 2028-05-23 → 2028-04-27 (-26d) | 2028-05-28 → 2028-05-03 (-25d) | -169d → -147.5d |
| CON-LEG101-DM-1020 | Site Clean Up | 2028-05-23 → 2028-04-27 (-26d) | 2028-05-28 → 2028-05-03 (-25d) | -169d → -147.5d |
| CON-LEG101-DM-1030 | Removal of Site Offices and Structures | 2028-05-23 → 2028-04-27 (-26d) | 2028-05-28 → 2028-05-03 (-25d) | -169d → -147.5d |
| CON-LEG101-DM-1040 | Restoration of Ground Surfaces | 2028-05-29 → 2028-05-03 (-26d) | 2028-06-03 → 2028-05-09 (-25d) | -169d → -147.5d |
