# JDH1-02-003 - Infrastructure Development For Industrial City 1 In Jeddah - Update - 10.11.2026

How a schedule from Primavera P6 changed from version to version. A marks actual dates.

## Version 7 (data date 2026-11-10, saved 2026-11-10, file 02. JDH1-02-003 -ENJ-WPR-051-10-11-2026 Update Schedule.xer)

| ID | WBS | Task | Duration | Start | Finish | Predecessors | Complete | Total float |
| --- | --- | --- | --- | --- | --- | --- | --- | --- |
|  | 5 | **Milestones** |  | 2025-11-19 | 2028-05-09 |  |  |  |
|  | 1 | **Key Milestones** |  | 2025-11-19 | 2028-05-09 |  |  |  |
| CON-LEG101-MS-1090 |  | Project Commencement Date | 0d | 2025-11-19 A | 2025-11-19 A |  | 100% |  |
| CON-LEG101-MS-1000 |  | Project Completion Date | 0d | 2028-05-09 | 2028-05-09 | CON-LEG101-MS-1080, CON-LEG101-MS-1060, CON-LEG101-MS-1120, CON-LEG101-MS-1130, CON-LEG101-MS-1140, CON-LEG101-MS-1150, CON-LEG101-MS-1100, CON-LEG101-MS-1010, CON-LEG101-MS-1040, CON-LEG101-MS-1030, CON-LEG101-MS-1020, CON-LEG101-MS-1050, CON-LEG101-DM-1000, CON-LEG101-DM-1010, CON-LEG101-DM-1020, CON-LEG101-DM-1030, CON-LEG101-DM-1040 |  | -147.5d |
|  | 2 | **Contractual Milestone** |  | 2025-12-18 | 2028-05-09 |  |  |  |
|  | 2 | **Mobilization** |  | 2026-03-04 | 2026-03-04 |  |  |  |
| CON-LEG101-MS-1070 |  | Finish Mobilization | 0d | 2026-03-04 A | 2026-03-04 A | CON-LEG101-MB-1020, CON-LEG101-PS-1100, CON-LEG101-PS-1110, CON-LEG101-PS-1120, CON-LEG101-PS-1130, CON-LEG101-PS-1140, CON-LEG101-PS-1150, CON-LEG101-PS-1160, CON-LEG101-PS-1170, CON-LEG101-MB-1160, CON-LEG101-MB-1110, CON-LEG101-MB-1120, CON-LEG101-MB-1000, CON-LEG101-MB-1340, CON-LEG101-MB-1270, CON-LEG101-MB-1260, CON-LEG101-MB-1250, CON-LEG101-MB-1130, CON-LEG101-MB-1150, CON-LEG101-TP-1330, CON-LEG101-PA-1000, CON-LEG101-PA-1010, CON-LEG101-PA-1020, CON-LEG101-PA-1030, CON-LEG101-PA-1040 | 100% |  |
|  | 3 | **Time Schedule** |  | 2025-12-18 | 2025-12-18 |  |  |  |
| CON-LEG101-MS-1080 |  | Finish Baseline Time Schedule | 0d | 2025-12-18 A | 2025-12-18 A | CON-LEG101-PS-1000, CON-LEG101-PS-1090 | 100% |  |
|  | 4 | **Engineering** |  | 2026-11-28 | 2026-11-28 |  |  |  |
| CON-LEG101-MS-1060 |  | Finish Submission and Approval for Shop Drawings, Method of Statement, Prequalification and Materials | 0d | 2026-11-28 | 2026-11-28 | CON-LEG101-EN-1780, CON-LEG101-EN-1790, CON-LEG101-EN-1800, CON-LEG101-EN-1750, CON-LEG101-EN-1760, CON-LEG101-EN-1770, CON-LEG101-EN-1720, CON-LEG101-EN-1730, CON-LEG101-EN-1740, CON-LEG101-EN-1690, CON-LEG101-EN-1700, CON-LEG101-EN-1710, CON-LEG101-EN-1660, CON-LEG101-EN-1670, CON-LEG101-EN-1680, CON-LEG101-EN-3280, CON-LEG101-EN-3290, CON-LEG101-EN-3300, CON-LEG101-EN-3310, CON-LEG101-EN-3320, CON-LEG101-EN-3330, CON-LEG101-EN-3360, CON-LEG101-EN-1570, CON-LEG101-EN-1580, CON-LEG101-EN-1590, CON-LEG101-EN-1600, CON-LEG101-EN-1610, CON-LEG101-EN-1150, CON-LEG101-EN-1160, CON-LEG101-EN-1170, CON-LEG101-EN-1190, CON-LEG101-EN-1200, CON-LEG101-EN-1210, CON-LEG101-EN-1230, CON-LEG101-EN-1220, CON-LEG101-EN-3340, CON-LEG101-EN-3350, CON-LEG101-EN-3370, CON-LEG101-EN-3380, CON-LEG101-EN-3390, CON-LEG101-EN-3400, CON-LEG101-EN-3410, CON-LEG101-EN-3420, CON-LEG101-EN-3430, CON-LEG101-EN-3440, CON-LEG101-EN-3450, CON-LEG101-EN-3460, CON-LEG101-EN-3490, CON-LEG101-EN-3500, CON-LEG101-EN-3510, CON-LEG101-EN-3520, CON-LEG101-EN-3530, CON-LEG101-EN-3560, CON-LEG101-EN-3590, CON-LEG101-EN-3540, CON-LEG101-EN-3550, CON-LEG101-EN-3470, CON-LEG101-EN-3570, CON-LEG101-EN-3580, CON-LEG101-EN-3480, CON-LEG101-SB-4270, CON-LEG101-SB-4290, CON-LEG101-SB-4310, CON-LEG101-SB-1030, CON-LEG101-SB-1070, CON-LEG101-SB-1110, CON-LEG101-SB-1150, CON-LEG101-SB-1190, CON-LEG101-SB-2370, CON-LEG101-SB-1230, CON-LEG101-SB-1590, CON-LEG101-SB-3330, CON-LEG101-SB-1550, CON-LEG101-SB-1630, CON-LEG101-SB-1470, CON-LEG101-SB-1510, CON-LEG101-SB-1430, CON-LEG101-SB-2110, CON-LEG101-SB-2070, CON-LEG101-SB-1390, CON-LEG101-SB-2030, CON-LEG101-SB-3750, CON-LEG101-SB-3790, CON-LEG101-SB-3810, CON-LEG101-SB-3770, CON-LEG101-SB-3830, CON-LEG101-SB-3850, CON-LEG101-SB-3870, CON-LEG101-SB-3890, CON-LEG101-SB-2310, CON-LEG101-SB-2330, CON-LEG101-SB-3910, CON-LEG101-SB-3350, CON-LEG101-SB-3390, CON-LEG101-SB-3370, CON-LEG101-SB-1270, CON-LEG101-SB-1790, CON-LEG101-SB-1830, CON-LEG101-SB-1870, CON-LEG101-SB-1670, CON-LEG101-SB-1310, CON-LEG101-SB-1710, CON-LEG101-SB-1750, CON-LEG101-SB-1350, CON-LEG101-SB-2430, CON-LEG101-SB-1910, CON-LEG101-SB-1950, CON-LEG101-SB-1990, CON-LEG101-SB-3410, CON-LEG101-SB-3510, CON-LEG101-SB-3450, CON-LEG101-SB-3430, CON-LEG101-SB-3470, CON-LEG101-SB-3490, CON-LEG101-SB-3530, CON-LEG101-SB-3630, CON-LEG101-SB-3550, CON-LEG101-SB-3570, CON-LEG101-SB-3590, CON-LEG101-SB-3610, CON-LEG101-SB-3650, CON-LEG101-SB-3670, CON-LEG101-SB-3690, CON-LEG101-SB-3710, CON-LEG101-SB-3730, CON-LEG101-SB-3950, CON-LEG101-SB-3970, CON-LEG101-SB-3990, CON-LEG101-SB-4010, CON-LEG101-SB-3940, CON-LEG101-SB-4040, CON-LEG101-SB-4150, CON-LEG101-SB-4190, CON-LEG101-SB-4050, CON-LEG101-SB-4070, CON-LEG101-SB-4090, CON-LEG101-SB-4110, CON-LEG101-SB-4130, CON-LEG101-SB-4170 |  | -45.5d |
|  | 1 | **Procurement** |  | 2026-11-22 | 2026-11-22 |  |  |  |
| CON-LEG101-MS-1100 |  | Finish PO for Short Lead Item & Long Lead Item | 0d | 2026-11-22 | 2026-11-22 | CON-LEG101-PR-3990, CON-LEG101-PR-1550, CON-LEG101-PR-1580, CON-LEG101-PR-1610, CON-LEG101-PR-1640, CON-LEG101-PR-1670, CON-LEG101-PR-1700, CON-LEG101-PR-1730, CON-LEG101-PR-1760, CON-LEG101-PR-1790, CON-LEG101-PR-1820, CON-LEG101-PR-1850, CON-LEG101-PR-2000, CON-LEG101-PR-2030, CON-LEG101-PR-2120, CON-LEG101-PR-2150, CON-LEG101-PR-2180, CON-LEG101-PR-2210, CON-LEG101-PR-2260, CON-LEG101-PR-2300, CON-LEG101-PR-2340, CON-LEG101-PR-2370, CON-LEG101-PR-2440, CON-LEG101-PR-2480, CON-LEG101-PR-2520, CON-LEG101-PR-2580, CON-LEG101-PR-2610, CON-LEG101-PR-2640, CON-LEG101-PR-2650, CON-LEG101-PR-2660, CON-LEG101-PR-2670, CON-LEG101-PR-2800, CON-LEG101-PR-2840, CON-LEG101-PR-2850, CON-LEG101-PR-2860, CON-LEG101-PR-2870, CON-LEG101-PR-2880, CON-LEG101-PR-2890, CON-LEG101-PR-3080, CON-LEG101-PR-3120, CON-LEG101-PR-3160, CON-LEG101-PR-3190, CON-LEG101-PR-3200, CON-LEG101-PR-3270, CON-LEG101-PR-3300, CON-LEG101-PR-3310, CON-LEG101-PR-3380, CON-LEG101-PR-3420, CON-LEG101-PR-3460, CON-LEG101-PR-3500, CON-LEG101-PR-3540, CON-LEG101-PR-3580, CON-LEG101-PR-3620, CON-LEG101-PR-3660, CON-LEG101-PR-3700, CON-LEG101-PR-3740, CON-LEG101-PR-3770, CON-LEG101-PR-3800, CON-LEG101-PR-3840, CON-LEG101-PR-3880, CON-LEG101-PR-3920, CON-LEG101-PR-1000, CON-LEG101-PR-1010, CON-LEG101-PR-1020, CON-LEG101-PR-1030, CON-LEG101-PR-1040, CON-LEG101-PR-1050, CON-LEG101-PR-1060, CON-LEG101-PR-1070, CON-LEG101-PR-1240, CON-LEG101-PR-1250, CON-LEG101-PR-1260, CON-LEG101-PR-1330, CON-LEG101-PR-1360, CON-LEG101-PR-1390, CON-LEG101-PR-1420, CON-LEG101-PR-1440, CON-LEG101-PR-1470, CON-LEG101-PR-1500, CON-LEG101-PR-1520 |  | -39.7d |
|  | 5 | **Construction** |  | 2027-02-08 | 2028-05-09 |  |  |  |
| CON-LEG101-MS-1130 |  | Completion of Deep infrastructure network | 0d | 2027-02-08 | 2027-02-08 | CON-LEG101-LR-4320, CON-LEG101-LR-3500, CON-LEG101-LR-4430, CON-LEG101-LR-3410, CON-LEG101-LR-4210, CON-LEG101-LR-4330, CON-LEG101-LR-11800, CON-LEG101-LR-11750, CON-LEG101-LR-4300, CON-LEG101-LR-3570, CON-LEG101-LR-3490, CON-LEG101-LR-11710, CON-LEG101-LR-11660, CON-LEG101-LR-4290, CON-LEG101-LR-3560, CON-LEG101-LR-3480, CON-LEG101-LR-11620, CON-LEG101-LR-11570, CON-LEG101-LR-4280, CON-LEG101-LR-3550, CON-LEG101-LR-3460, CON-LEG101-LR-11530, CON-LEG101-LR-11480, CON-LEG101-LR-4260, CON-LEG101-LR-3540, CON-LEG101-LR-3450, CON-LEG101-LR-11440, CON-LEG101-LR-11390, CON-LEG101-LR-4250, CON-LEG101-LR-11340, CON-LEG101-LR-11280, CON-LEG101-LR-4240, CON-LEG101-LR-3530, CON-LEG101-LR-3440, CON-LEG101-LR-11230, CON-LEG101-LR-11180, CON-LEG101-LR-4230, CON-LEG101-LR-3520, CON-LEG101-LR-3430, CON-LEG101-LR-11130, CON-LEG101-LR-11070, CON-LEG101-LR-4220, CON-LEG101-LR-3510, CON-LEG101-LR-3420, CON-LEG101-LR-11030, CON-LEG101-LR-10970, CON-LEG101-LR-10880, CON-LEG101-LR-10920, CON-LEG101-LR-4200 |  | 67.15d |
| CON-LEG101-MS-1120 |  | Completion of Roads & Meduim Voltage | 0d | 2027-07-10 | 2027-07-10 | CON-LEG101-LR-5880, CON-LEG101-LR-7680, CON-LEG101-LR-5890, CON-LEG101-LR-7690, CON-LEG101-LR-5900, CON-LEG101-LR-7700, CON-LEG101-LR-5910, CON-LEG101-LR-7710, CON-LEG101-LR-5920, CON-LEG101-LR-7720, CON-LEG101-LR-5930, CON-LEG101-LR-7730, CON-LEG101-LR-5940, CON-LEG101-LR-7740, CON-LEG101-LR-5950, CON-LEG101-LR-7750, CON-LEG101-LR-5960, CON-LEG101-LR-7760, CON-LEG101-LR-5970 |  | -82.5d |
| CON-LEG101-MS-1140 |  | Completion of Shallow infrastructure network | 0d | 2027-10-24 | 2027-10-24 | CON-LEG101-LR-2070, CON-LEG101-LR-2460, CON-LEG101-LR-2610, CON-LEG101-LR-2680, CON-LEG101-LR-10740, CON-LEG101-LR-1000, CON-LEG101-LR-1110, CON-LEG101-LR-1150, CON-LEG101-LR-8760, CON-LEG101-LR-9330, CON-LEG101-LR-9940, CON-LEG101-LR-8330, CON-LEG101-LR-2320, CON-LEG101-LR-2390, CON-LEG101-LR-2470, CON-LEG101-LR-10750, CON-LEG101-LR-1260, CON-LEG101-LR-1010, CON-LEG101-LR-1120, CON-LEG101-LR-1160, CON-LEG101-LR-8770, CON-LEG101-LR-9340, CON-LEG101-LR-9950, CON-LEG101-LR-8290, CON-LEG101-LR-8340, CON-LEG101-LR-8440, CON-LEG101-LR-2100, CON-LEG101-LR-2210, CON-LEG101-LR-2330, CON-LEG101-LR-2480, CON-LEG101-LR-10760, CON-LEG101-LR-1020, CON-LEG101-LR-1130, CON-LEG101-LR-1170, CON-LEG101-LR-1230, CON-LEG101-LR-1270, CON-LEG101-LR-8780, CON-LEG101-LR-9350, CON-LEG101-LR-9960, CON-LEG101-LR-8300, CON-LEG101-LR-8350, CON-LEG101-LR-8450, CON-LEG101-LR-2110, CON-LEG101-LR-2220, CON-LEG101-LR-2410, CON-LEG101-LR-2490, CON-LEG101-LR-2710, CON-LEG101-LR-10770, CON-LEG101-LR-1030, CON-LEG101-LR-8790, CON-LEG101-LR-9360, CON-LEG101-LR-9970, CON-LEG101-LR-8310, CON-LEG101-LR-8360, CON-LEG101-LR-8460, CON-LEG101-LR-2120, CON-LEG101-LR-2230, CON-LEG101-LR-2340, CON-LEG101-LR-2420, CON-LEG101-LR-2500, CON-LEG101-LR-2640, CON-LEG101-LR-2720, CON-LEG101-LR-10780, CON-LEG101-LR-1040, CON-LEG101-LR-8800, CON-LEG101-LR-9370, CON-LEG101-LR-9900, CON-LEG101-LR-9980, CON-LEG101-LR-8370, CON-LEG101-LR-2130, CON-LEG101-LR-2240, CON-LEG101-LR-2350, CON-LEG101-LR-2430, CON-LEG101-LR-2510, CON-LEG101-LR-2730, CON-LEG101-LR-10790, CON-LEG101-LR-1050, CON-LEG101-LR-1180, CON-LEG101-LR-1280, CON-LEG101-LR-8810, CON-LEG101-LR-9380, CON-LEG101-LR-9990, CON-LEG101-LR-8380, CON-LEG101-LR-2140, CON-LEG101-LR-2740, CON-LEG101-LR-2250, CON-LEG101-LR-2360, CON-LEG101-LR-2440, CON-LEG101-LR-2520, CON-LEG101-LR-2660, CON-LEG101-LR-10800, CON-LEG101-LR-1060, CON-LEG101-LR-1140, CON-LEG101-LR-1240, CON-LEG101-LR-8820, CON-LEG101-LR-9390, CON-LEG101-LR-10000, CON-LEG101-LR-7460, CON-LEG101-LR-8390, CON-LEG101-LR-2150, CON-LEG101-LR-2260, CON-LEG101-LR-2530, CON-LEG101-LR-10810, CON-LEG101-LR-1070, CON-LEG101-LR-8050, CON-LEG101-LR-7950, CON-LEG101-LR-7850, CON-LEG101-LR-9400, CON-LEG101-LR-10010, CON-LEG101-LR-8400, CON-LEG101-LR-2160, CON-LEG101-LR-2270, CON-LEG101-LR-2540, CON-LEG101-LR-10820, CON-LEG101-LR-1080, CON-LEG101-LR-7960, CON-LEG101-LR-8060, CON-LEG101-LR-9410, CON-LEG101-LR-10020, CON-LEG101-LR-8410, CON-LEG101-LR-2170, CON-LEG101-LR-2280, CON-LEG101-LR-2370, CON-LEG101-LR-2450, CON-LEG101-LR-2550, CON-LEG101-LR-2670, CON-LEG101-LR-2750, CON-LEG101-LR-10830, CON-LEG101-LR-1090, CON-LEG101-LR-7970, CON-LEG101-LR-8070, CON-LEG101-LR-8500, CON-LEG101-LR-9420, CON-LEG101-LR-10030, CON-LEG101-LR-8320, CON-LEG101-LR-8420, CON-LEG101-LR-8470, CON-LEG101-LR-8280, CON-LEG101-PR-1970, CON-LEG101-LR-1520, CON-LEG101-LR-2630, CON-LEG101-LR-1570, CON-LEG101-LR-1580, CON-LEG101-LR-1590, CON-LEG101-LR-1620, CON-LEG101-PR-1960, CON-LEG101-LR-15130, CON-LEG101-LR-15140, CON-LEG101-LR-15150, CON-LEG101-LR-15160, CON-LEG101-LR-15170 |  | -52.4d |
| CON-LEG101-MS-1150 |  | Completion all Works | 0d | 2028-05-09 | 2028-05-09 | CON-LEG101-MS-1120, CON-LEG101-MS-1130, CON-LEG101-MS-1140, CON-LEG101-MS-1020, CON-LEG101-MS-1050, CON-LEG101-MS-1010, CON-LEG101-MS-1040, CON-LEG101-MS-1030, CON-LEG101-DM-1040, CON-LEG101-DM-1030, CON-LEG101-DM-1020, CON-LEG101-DM-1010, CON-LEG101-DM-1000 |  | -147.5d |
|  | 6 | **Monitoring and Control Milestone** |  | 2027-07-11 | 2028-04-08 |  |  |  |
| CON-LEG101-MS-1050 |  | Completion of Outside Boundary Area's Scope (Tie-in Lines) | 0d | 2027-07-11 | 2027-07-11 | CON-LEG101-OBA-1140, CON-LEG101-OBA-1150, CON-LEG101-OBA-1060, CON-LEG101-OBA-1070, CON-LEG101-OBA-1220, CON-LEG101-OBA-1420, CON-LEG101-OBA-1430, CON-LEG101-OBA-1340, CON-LEG101-OBA-1440, CON-LEG101-OBA-1450, CON-LEG101-OBA-1410, CON-LEG101-OBA-1510 FF |  | 5.18d |
| CON-LEG101-MS-1020 |  | Completion of Bridge | 0d | 2027-09-05 | 2027-09-05 | CON-LEG101-BR-1250, CON-LEG101-BR-1020, CON-LEG101-BR-1030, CON-LEG101-BR-1130, CON-LEG101-BR-1060, CON-LEG101-BR-1090, CON-LEG101-BR-1220, CON-LEG101-BR-1230 |  | -43d |
| CON-LEG101-MS-1040 |  | Completion of Fence and Gate | 0d | 2027-12-12 | 2027-12-12 | CON-LEG101-FG-1340, CON-LEG101-FG-1350, CON-LEG101-FG-1360, CON-LEG101-FG-1270, CON-LEG101-FG-1370, CON-LEG101-FG-1380 |  | -43d |
| CON-LEG101-MS-1010 |  | Completion of Roads Finishing | 0d | 2027-12-29 | 2027-12-29 | CON-LEG101-LR-6080, CON-LEG101-LR-6090, CON-LEG101-LR-6100, CON-LEG101-LR-6110, CON-LEG101-LR-6120, CON-LEG101-LR-6180, CON-LEG101-LR-6380, CON-LEG101-LR-6280, CON-LEG101-LR-6680, CON-LEG101-LR-6780, CON-LEG101-LR-6190, CON-LEG101-LR-6390, CON-LEG101-LR-6290, CON-LEG101-LR-6690, CON-LEG101-LR-6790, CON-LEG101-LR-6200, CON-LEG101-LR-6400, CON-LEG101-LR-6300, CON-LEG101-LR-6700, CON-LEG101-LR-6800, CON-LEG101-LR-6210, CON-LEG101-LR-6410, CON-LEG101-LR-6310, CON-LEG101-LR-6710, CON-LEG101-LR-6810, CON-LEG101-LR-6220, CON-LEG101-LR-6420, CON-LEG101-LR-6320, CON-LEG101-LR-6720, CON-LEG101-LR-6820, CON-LEG101-LR-6230, CON-LEG101-LR-6130, CON-LEG101-LR-6430, CON-LEG101-LR-6330, CON-LEG101-LR-6730, CON-LEG101-LR-6830, CON-LEG101-LR-6240, CON-LEG101-LR-6140, CON-LEG101-LR-6440, CON-LEG101-LR-6340, CON-LEG101-LR-6740, CON-LEG101-LR-6840, CON-LEG101-LR-6250, CON-LEG101-LR-6150, CON-LEG101-LR-6450, CON-LEG101-LR-6350, CON-LEG101-LR-6750, CON-LEG101-LR-6850, CON-LEG101-LR-6260, CON-LEG101-LR-6160, CON-LEG101-LR-6460, CON-LEG101-LR-6360, CON-LEG101-LR-6760, CON-LEG101-LR-6860, CON-LEG101-LR-6270, CON-LEG101-LR-6170, CON-LEG101-LR-6470, CON-LEG101-LR-6370, CON-LEG101-LR-6770, CON-LEG101-LR-6870 |  | -109.4d |
| CON-LEG101-MS-1030 |  | Completion of Roundabout & Landscape works | 0d | 2028-04-08 | 2028-04-08 | CON-LEG101-RA-1390, A, CON-LEG101-RA-1090, CON-LEG101-RA-1060, CON-LEG101-RA-1400, CON-LEG101-RA-1460, CON-LEG101-RA-1100, CON-LEG101-RA-1070, CON-LEG101-RA-1410, CON-LEG101-RA-1470, CON-LEG101-RA-1110, CON-LEG101-RA-1080 |  | -147.5d |
|  | 2 | **Mobilization** |  | 2025-11-19 | 2026-03-04 |  |  |  |
|  | 4 | **Topographic Survey** |  | 2025-11-19 | 2025-11-27 |  |  |  |
| CON-LEG101-TP-1330 |  | Site Survey Works | 8d | 2025-11-19 A | 2025-11-27 A | CON-LEG101-MS-1090 SS | 100% |  |
|  | 2 | **Site Facilities & Offices** |  | 2025-11-19 | 2026-01-12 |  |  |  |
| CON-LEG101-MB-1000 |  | Mobilization of Manpower | 4d | 2025-11-19 A | 2025-11-29 A | CON-LEG101-MB-1130 | 100% |  |
| CON-LEG101-MB-1020 |  | Mobilization of Equipment | 6d | 2025-11-19 A | 2025-11-29 A | CON-LEG101-MB-1150 | 100% |  |
| CON-LEG101-MB-1160 |  | Construct Site Offices & Storage | 17d | 2025-11-19 A | 2026-01-12 A | CON-LEG101-MB-1260 | 100% |  |
| CON-LEG101-MB-1340 |  | Site Layout Plan | 6d | 2025-11-19 A | 2025-11-25 A | CON-LEG101-MS-1090 SS | 100% |  |
| CON-LEG101-MB-1120 |  | Electrical Works & Connections | 11d | 2025-11-26 A | 2025-11-29 A | CON-LEG101-MB-1250, CON-LEG101-MB-1130 SS | 100% |  |
| CON-LEG101-MB-1130 |  | Install Site Facilities | 7d | 2025-11-26 A | 2025-11-27 A | CON-LEG101-MB-1250 | 100% |  |
| CON-LEG101-MB-1260 |  | Construct Site Access Roads | 3d | 2025-11-26 A | 2025-11-29 A | CON-LEG101-MB-1340 | 100% |  |
| CON-LEG101-MB-1270 |  | Clear & Grub for Offices & Access Road | 2d | 2025-11-26 A | 2025-11-27 A | CON-LEG101-MB-1340 | 100% |  |
| CON-LEG101-MB-1250 |  | Construct Temporary Fence | 7d | 2025-11-29 A | 2025-12-04 A | CON-LEG101-MB-1270 | 100% |  |
| CON-LEG101-MB-1110 |  | Construct Parking Sheds | 11d | 2025-12-28 A | 2026-01-06 A | CON-LEG101-MB-1250 | 100% |  |
| CON-LEG101-MB-1150 |  | Install Project Signs | 11d | 2025-12-28 A | 2025-12-30 A | CON-LEG101-MB-1260 | 100% |  |
|  | 1 | **Permit's and Authority Approvals** |  | 2025-11-19 | 2025-11-20 |  |  |  |
| CON-LEG101-PA-1000 |  | Excavation & Backfilling Permit Permit | 18d | 2025-11-19 A | 2025-11-20 A | CON-LEG101-MS-1090 SS | 100% |  |
| CON-LEG101-PA-1010 |  | Saudi Electricity Company Permit | 18d | 2025-11-19 A | 2025-11-20 A | CON-LEG101-MS-1090 SS | 100% |  |
| CON-LEG101-PA-1020 |  | Utility Clearance (NOC) Permit | 18d | 2025-11-19 A | 2025-11-20 A | CON-LEG101-MS-1090 SS | 100% |  |
| CON-LEG101-PA-1030 |  | Landscaping & Irrigation Works Permit Permit | 18d | 2025-11-19 A | 2025-11-20 A | CON-LEG101-MS-1090 SS | 100% |  |
| CON-LEG101-PA-1040 |  | Material Transportation Permit (MOT) | 18d | 2025-11-19 A | 2025-11-20 A | CON-LEG101-MS-1090 SS | 100% |  |
|  | 3 | **Preliminary Submittals** |  | 2025-11-19 | 2026-03-04 |  |  |  |
|  | 1 | **Preparation and Submittal by Contractor's** |  | 2025-11-19 | 2025-12-28 |  |  |  |
| CON-LEG101-PS-1000 |  | Preparation and Submittal of Detailed Work Order Programme (baseline schedule) | 20d | 2025-11-19 A | 2025-12-16 A | CON-LEG101-MS-1090 SS | 100% |  |
| CON-LEG101-PS-1010 |  | Preparation and Submittal of Project Execution Plan | 11d | 2025-11-25 A | 2025-12-27 A | CON-LEG101-MB-1260 | 100% |  |
| CON-LEG101-PS-1020 |  | Preparation and Submittal of Quality Management Plan | 11d | 2025-11-25 A | 2025-12-28 A | CON-LEG101-MB-1260 | 100% |  |
| CON-LEG101-PS-1070 |  | Preparation and Submittal of Organization Chart | 11d | 2025-11-25 A | 2025-11-25 A | CON-LEG101-MB-1260 | 100% |  |
| CON-LEG101-PS-1030 |  | Preparation and Submittal of Safety Management Plan | 11d | 2025-12-10 A | 2025-12-10 A | CON-LEG101-MB-1260 | 100% |  |
| CON-LEG101-PS-1050 |  | Preparation and Submittal of Project Security Management Plan | 11d | 2025-12-10 A | 2025-12-10 A | CON-LEG101-MB-1260 | 100% |  |
| CON-LEG101-PS-1040 |  | Preparation and Submittal of Risk Plan | 11d | 2025-12-15 A | 2025-12-15 A | CON-LEG101-MB-1260 | 100% |  |
| CON-LEG101-PS-1060 |  | Preparation and Submittal of Project Waste Management Plan | 11d | 2025-12-15 A | 2025-12-27 A | CON-LEG101-MB-1260 | 100% |  |
|  | 2 | **Approval by the Employer's** |  | 2025-12-17 | 2026-03-04 |  |  |  |
| CON-LEG101-PS-1090 |  | Approval of Detailed Work Order Programme (baseline schedule) | 6d | 2025-12-17 A | 2025-12-18 A | CON-LEG101-PS-1000 | 100% |  |
| CON-LEG101-PS-1130 |  | Approval of Risk Plan | 6d | 2025-12-18 A | 2025-12-18 A | CON-LEG101-PS-1040 | 100% |  |
| CON-LEG101-PS-1160 |  | Approval of Organization Chart | 6d | 2026-01-08 A | 2026-01-08 A | CON-LEG101-PS-1070 | 100% |  |
| CON-LEG101-PS-1170 |  | Approval of Comminumcation Plan | 6d | 2026-01-15 A | 2026-01-15 A | CON-LEG101-MB-1260 | 100% |  |
| CON-LEG101-PS-1120 |  | Approval of Safety Management Plan | 6d | 2026-02-03 A | 2026-03-04 A | CON-LEG101-PS-1030 | 100% |  |
| CON-LEG101-PS-1140 |  | Approval of Project Security Management Plan | 6d | 2026-02-03 A | 2026-02-03 A | CON-LEG101-PS-1050 | 100% |  |
| CON-LEG101-PS-1150 |  | Approval of Project Waste Management Plan | 6d | 2026-02-03 A | 2026-02-03 A | CON-LEG101-PS-1060 | 100% |  |
| CON-LEG101-PS-1100 |  | Approval of Project Execution Plan | 6d | 2026-02-05 A | 2026-02-05 A | CON-LEG101-PS-1010 | 100% |  |
| CON-LEG101-PS-1110 |  | Approval of Quality Management Plan | 6d | 2026-02-09 A | 2026-02-09 A | CON-LEG101-PS-1020 | 100% |  |
|  | 3 | **Engineering** |  | 2025-12-01 | 2026-11-28 |  |  |  |
|  | 2 | **Shop Drawings** |  | 2025-12-04 | 2026-11-28 |  |  |  |
|  | 1 | **Shop Drawings Submittal** |  | 2025-12-04 | 2026-11-21 |  |  |  |
|  | 6 | **Shop Drawings Submittal for Stormwater Utilities** |  | 2026-01-01 | 2026-01-01 |  |  |  |
| CON-LEG101-EN-1510 |  | Shop DWG Submittal for Stormwater Utilities | 9d | 2026-01-01 A | 2026-01-01 A | CON-LEG101-TP-1330 | 100% |  |

| ID | WBS | Task | Duration | Start | Finish | Predecessors | Complete | Total float |
| --- | --- | --- | --- | --- | --- | --- | --- | --- |
| CON-LEG101-EN-1520 |  | Shop DWG Submittal for Stormwater Utilities Profiles | 9d | 2026-01-01 A | 2026-01-01 A | CON-LEG101-EN-1510 SS | 100% |  |
| CON-LEG101-EN-1530 |  | Shop DWG Submittal for Stormwater Utilities Standard Details | 9d | 2026-01-01 A | 2026-01-01 A | CON-LEG101-EN-1510 SS, CON-LEG101-EN-1520 | 100% |  |
|  | 5 | **Shop Drawings Submittal for Sanitary Sewerage** |  | 2025-12-16 | 2025-12-16 |  |  |  |
| CON-LEG101-EN-1480 |  | Shop DWG Submittal for Sanitary Sewerage | 9d | 2025-12-16 A | 2025-12-16 A | CON-LEG101-EN-1510 | 100% |  |
| CON-LEG101-EN-1490 |  | Shop DWG Submittal for Sanitary Sewerage Profiles | 9d | 2025-12-16 A | 2025-12-16 A | CON-LEG101-EN-1480 SS | 100% |  |
| CON-LEG101-EN-1500 |  | Shop DWG Submittal for Sanitary Sewerage Standard Details | 9d | 2025-12-16 A | 2025-12-16 A | CON-LEG101-EN-1490 SS | 100% |  |
|  | 4 | **Shop Drawings Submittal for TSE Network** |  | 2026-01-03 | 2026-01-04 |  |  |  |
| CON-LEG101-EN-1450 |  | Shop DWG Submittal for TSE Network | 5d | 2026-01-03 A | 2026-01-04 A | CON-LEG101-EN-1480 | 100% |  |
| CON-LEG101-EN-1460 |  | Shop DWG Submittal for TSE Profiles | 5d | 2026-01-03 A | 2026-01-04 A | CON-LEG101-EN-1450 SS | 100% |  |
| CON-LEG101-EN-1470 |  | Shop DWG Submittal for TSE Standard Details | 5d | 2026-01-03 A | 2026-01-04 A | CON-LEG101-EN-1460 SS | 100% |  |
|  | 3 | **Shop Drawings Submittal for Public Water Utility Distribution** |  | 2026-01-04 | 2026-01-04 |  |  |  |
| CON-LEG101-EN-1420 |  | Shop DWG Submittal for Public Water Utility Distribution | 5d | 2026-01-04 A | 2026-01-04 A | CON-LEG101-EN-1450 SS | 100% |  |
| CON-LEG101-EN-1430 |  | Shop DWG Submittal for Potable Water Profiles | 5d | 2026-01-04 A | 2026-01-04 A | CON-LEG101-EN-1420 SS | 100% |  |
| CON-LEG101-EN-1440 |  | Shop DWG Submittal for Potable Water Standard Details | 5d | 2026-01-04 A | 2026-01-04 A | CON-LEG101-EN-1430 SS | 100% |  |
|  | 2 | **Shop Drawings Submittal for Electrical Network** |  | 2025-12-17 | 2026-11-21 |  |  |  |
| CON-LEG101-EN-1410 |  | Shop DWG Submittal for Low Voltage Network | 9d | 2025-12-17 A | 2025-12-17 A | CON-LEG101-EN-1390 SS | 100% |  |
| CON-LEG101-EN-1400 |  | Shop DWG Submittal for Street Lighting | 9d | 2025-12-18 A | 2025-12-18 A | CON-LEG101-EN-1390 SS | 100% |  |
| CON-LEG101-EN-1390 |  | Shop DWG Submittal for Medium Voltage Network | 9d | 2026-11-11 | 2026-11-21 | CON-LEG101-EN-1420, CON-LEG101-MS-1080 |  | -45.5d |
|  | 8 | **Shop Drawings Submittal for Telecommunications** |  | 2025-12-17 | 2025-12-17 |  |  |  |
| CON-LEG101-EN-3190 |  | Shop DWG Submittal for Telecommunications Works | 9d | 2025-12-17 A | 2025-12-17 A | CON-LEG101-EN-1420 | 100% |  |
|  | 9 | **Shop Drawings Submittal for CCTV feeding system and GSM** |  | 2025-12-17 | 2025-12-17 |  |  |  |
| CON-LEG101-EN-3200 |  | Shop DWG Submittal for CCTV feeding system and GSM | 9d | 2025-12-17 A | 2025-12-17 A | CON-LEG101-EN-1420 | 100% |  |
|  | 10 | **Shop Drawings Submittal for Earthing System** |  | 2025-12-18 | 2025-12-18 |  |  |  |
| CON-LEG101-EN-3210 |  | Shop DWG Submittal for Earthing System | 9d | 2025-12-18 A | 2025-12-18 A | CON-LEG101-EN-1420 | 100% |  |
|  | 11 | **Shop Drawings Submittal for Road Lighting** |  | 2025-12-18 | 2025-12-18 |  |  |  |
| CON-LEG101-EN-1260 |  | Shop DWG Submittal for Street Lighting General Arrangement | 15d | 2025-12-18 A | 2025-12-18 A | CON-LEG101-EN-1420 | 100% |  |
| CON-LEG101-EN-1270 |  | Shop DWG Submittal for Street Lighting Network Layout | 15d | 2025-12-18 A | 2025-12-18 A | CON-LEG101-EN-1260 SS | 100% |  |
| CON-LEG101-EN-1280 |  | Shop DWG Submittal for Street Lighting Details | 15d | 2025-12-18 A | 2025-12-18 A | CON-LEG101-EN-1270 SS | 100% |  |
| CON-LEG101-EN-1290 |  | Shop DWG Submittal for Street Lighting Single Line Diagram | 15d | 2025-12-18 A | 2025-12-18 A | CON-LEG101-EN-1280 SS | 100% |  |
|  | 1 | **Shop Drawings Submittal for Road Works** |  | 2025-12-04 | 2025-12-06 |  |  |  |
| CON-LEG101-EN-1300 |  | Shop DWG Submittal for Topographic Survey | 6d | 2025-12-04 A | 2025-12-06 A | CON-LEG101-TP-1330, CON-LEG101-EN-1420 | 100% |  |
| CON-LEG101-EN-1310 |  | Shop DWG Submittal for Road Layout Plan | 6d | 2025-12-04 A | 2025-12-06 A | CON-LEG101-TP-1330, CON-LEG101-EN-1300 | 100% |  |
| CON-LEG101-EN-1320 |  | Shop DWG Submittal for Typical Cross Section | 6d | 2025-12-04 A | 2025-12-06 A | CON-LEG101-TP-1330, CON-LEG101-EN-1310 SS | 100% |  |
| CON-LEG101-EN-1330 |  | Shop DWG Submittal for Road Setting Out | 6d | 2025-12-04 A | 2025-12-06 A | CON-LEG101-TP-1330, CON-LEG101-EN-1310 SS | 100% |  |
| CON-LEG101-EN-1340 |  | Shop DWG Submittal for Road Profiles | 6d | 2025-12-04 A | 2025-12-06 A | CON-LEG101-TP-1330, CON-LEG101-EN-1300 | 100% |  |
|  | 14 | **Shop Drawings Submittal for Bridge Works** |  | 2025-12-31 | 2025-12-31 |  |  |  |
| CON-LEG101-EN-1020 |  | Shop DWG Submittal for Piles Setting out and Reinforcement Details | 15d | 2025-12-31 A | 2025-12-31 A | CON-LEG101-MB-1000 | 100% |  |
| CON-LEG101-EN-1030 |  | Shop DWG Submittal for Abutment Setting out and Reinforcement Details | 15d | 2025-12-31 A | 2025-12-31 A | CON-LEG101-MB-1000 | 100% |  |
| CON-LEG101-EN-1040 |  | Shop DWG Submittal for Pier and Pilecap Setting out and Reinforcement Details | 15d | 2025-12-31 A | 2025-12-31 A | CON-LEG101-MB-1000, CON-LEG101-EN-1030 SS | 100% |  |
| CON-LEG101-EN-1060 |  | Shop DWG Submittal for Deck Slab Setting out and Reinforcement Details | 15d | 2025-12-31 A | 2025-12-31 A | CON-LEG101-MB-1000 | 100% |  |
| CON-LEG101-EN-1070 |  | Shop DWG Submittal for Bearing Setting out and Details | 15d | 2025-12-31 A | 2025-12-31 A | CON-LEG101-MB-1000, CON-LEG101-EN-1090 SS | 100% |  |
| CON-LEG101-EN-1080 |  | Shop DWG Submittal for Deflection Diagram | 15d | 2025-12-31 A | 2025-12-31 A | CON-LEG101-MB-1000, CON-LEG101-EN-1020 SS | 100% |  |
| CON-LEG101-EN-1090 |  | Shop DWG Submittal for Appron Slab Details | 15d | 2025-12-31 A | 2025-12-31 A | CON-LEG101-MB-1000, CON-LEG101-EN-1060 SS | 100% |  |
| CON-LEG101-EN-1100 |  | Shop DWG Submittal for Finishing Works Details | 15d | 2025-12-31 A | 2025-12-31 A | CON-LEG101-MB-1000, CON-LEG101-EN-1070 SS | 100% |  |
|  | 12 | **Shop Drawings Submittal for Irrigation Works** |  | 2026-01-10 | 2026-01-10 |  |  |  |
| CON-LEG101-EN-3220 |  | Shop DWG Submittal for Secondary Irrigation Pipe Works | 9d | 2026-01-10 A | 2026-01-10 A | CON-LEG101-MB-1000 | 100% |  |
| CON-LEG101-EN-3230 |  | Shop DWG Submittal for Secondary Irrigation Valves and Controller Works | 9d | 2026-01-10 A | 2026-01-10 A | CON-LEG101-EN-3220 SS | 100% |  |
|  | 13 | **Shop Drawings Submittal for Landscape Works** |  | 2026-01-10 | 2026-01-10 |  |  |  |
| CON-LEG101-EN-3240 |  | Shop DWG Submittal for Preparation Works | 9d | 2026-01-10 A | 2026-01-10 A | CON-LEG101-EN-3220 SS | 100% |  |
| CON-LEG101-EN-3250 |  | Shop DWG Submittal for Placing Agricutural Soil works | 9d | 2026-01-10 A | 2026-01-10 A | CON-LEG101-EN-3240 SS | 100% |  |
| CON-LEG101-EN-3260 |  | Shop DWG Submittal for Planting Works | 9d | 2026-01-10 A | 2026-01-10 A | CON-LEG101-EN-3250 SS | 100% |  |
| CON-LEG101-EN-3270 |  | Shop DWG Submittal for Curb Setting Out Points | 9d | 2026-01-10 A | 2026-01-10 A | CON-LEG101-EN-3260 SS | 100% |  |
|  | 7 | **Shop Drawings Submittal for Fence & Gates** |  | 2025-12-06 | 2025-12-16 |  |  |  |
| CON-LEG101-EN-1540 |  | Shop DWG Submittal for the Fence & Gates - Civil Works | 9d | 2025-12-06 A | 2025-12-16 A | CON-LEG101-EN-3240 SS | 100% |  |
| CON-LEG101-EN-1550 |  | Shop DWG Submittal for the Fence & Gates - Mechanical Works | 9d | 2025-12-06 A | 2025-12-16 A | CON-LEG101-EN-1540 SS | 100% |  |
| CON-LEG101-EN-1560 |  | Shop DWG Submittal for the Fence & Gates - Finishing Works | 9d | 2025-12-06 A | 2025-12-16 A | CON-LEG101-EN-1550 SS | 100% |  |
|  | 2 | **Shop Drawings Approval** |  | 2025-12-08 | 2026-11-28 |  |  |  |
|  | 6 | **Shop Drawings Approval for Storm Network** |  | 2026-01-07 | 2026-02-03 |  |  |  |
| CON-LEG101-EN-1780 |  | Shop DWG Approval for Stormwater Utilities | 6d | 2026-01-07 A | 2026-02-03 A | CON-LEG101-EN-1510 | 100% |  |
| CON-LEG101-EN-1790 |  | Shop DWG Approval for Stormwater UtilitiesProfiles | 6d | 2026-01-07 A | 2026-02-03 A | CON-LEG101-EN-1520, CON-LEG101-EN-1780 | 100% |  |
| CON-LEG101-EN-1800 |  | Shop DWG Approval for Stormwater UtilitiesStandard Details | 6d | 2026-01-07 A | 2026-02-03 A | CON-LEG101-EN-1530, CON-LEG101-EN-1790 | 100% |  |
|  | 5 | **Shop Drawings Approval for Sanitary Sewerage** |  | 2025-12-17 | 2026-01-14 |  |  |  |
| CON-LEG101-EN-1750 |  | Shop DWG Approval for Sanitary Sewerage | 6d | 2025-12-17 A | 2026-01-14 A | CON-LEG101-EN-1480 | 100% |  |
| CON-LEG101-EN-1760 |  | Shop DWG Approval for Sanitary Sewerage Profiles | 6d | 2025-12-17 A | 2026-01-14 A | CON-LEG101-EN-1490 | 100% |  |
| CON-LEG101-EN-1770 |  | Shop DWG Approval for Sanitary Sewerage Standard Details | 6d | 2025-12-17 A | 2026-01-14 A | CON-LEG101-EN-1500 | 100% |  |
|  | 4 | **Shop Drawings Approval for TSE Network** |  | 2026-01-08 | 2026-01-20 |  |  |  |
| CON-LEG101-EN-1720 |  | Shop DWG Approval for TSE Network | 6d | 2026-01-08 A | 2026-01-20 A | CON-LEG101-EN-1450 | 100% |  |
| CON-LEG101-EN-1730 |  | Shop DWG Approval for TSE Profiles | 6d | 2026-01-08 A | 2026-01-20 A | CON-LEG101-EN-1460 | 100% |  |
| CON-LEG101-EN-1740 |  | Shop DWG Approval for TSE Standard Details | 6d | 2026-01-08 A | 2026-01-20 A | CON-LEG101-EN-1470 | 100% |  |
|  | 3 | **Shop Drawings Approval for Public Water Utility Distribution** |  | 2026-01-10 | 2026-01-15 |  |  |  |

| ID | WBS | Task | Duration | Start | Finish | Predecessors | Complete | Total float |
| --- | --- | --- | --- | --- | --- | --- | --- | --- |
| CON-LEG101-EN-1690 |  | Shop DWG Approval for Public Water Utility Distribution | 6d | 2026-01-10 A | 2026-01-15 A | CON-LEG101-EN-1420 | 100% |  |
| CON-LEG101-EN-1700 |  | Shop DWG Approval for Potable Water Profiles | 6d | 2026-01-10 A | 2026-01-15 A | CON-LEG101-EN-1430 | 100% |  |
| CON-LEG101-EN-1710 |  | Shop DWG Approval for Potable Water Standard Details | 6d | 2026-01-10 A | 2026-01-15 A | CON-LEG101-EN-1440 | 100% |  |
|  | 2 | **Shop Drawings Approval for Electrical Network** |  | 2025-12-23 | 2026-11-28 |  |  |  |
| CON-LEG101-EN-1670 |  | Shop DWG Approval for Street Lighting | 6d | 2025-12-23 A | 2026-02-28 A | CON-LEG101-EN-1400 | 100% |  |
| CON-LEG101-EN-1680 |  | Shop DWG Approval for Low Voltage Network | 6d | 2025-12-23 A | 2025-12-23 A | CON-LEG101-EN-1410 | 100% |  |
| CON-LEG101-EN-1660 |  | Shop DWG Approval for Medium Voltage Network | 6d | 2026-11-22 | 2026-11-28 | CON-LEG101-EN-1390 |  | -45.5d |
|  | 8 | **Shop Drawings Approval for Telecommunications** |  | 2025-12-27 | 2026-04-05 |  |  |  |
| CON-LEG101-EN-3280 |  | Shop DWG Approval for Telecommunications Works | 6d | 2025-12-27 A | 2026-04-05 A | CON-LEG101-EN-3190 | 100% |  |
|  | 9 | **Shop Drawings Approval for CCTV feeding system and GSM** |  | 2026-02-14 | 2026-02-14 |  |  |  |
| CON-LEG101-EN-3290 |  | Shop DWG Approval for CCTV feeding system and GSM | 6d | 2026-02-14 A | 2026-02-14 A | CON-LEG101-EN-3200 | 100% |  |
|  | 10 | **Shop Drawings Approval for Earthing System** |  | 2025-12-23 | 2025-12-23 |  |  |  |
| CON-LEG101-EN-3300 |  | Shop DWG Approval for Earthing System | 6d | 2025-12-23 A | 2025-12-23 A | CON-LEG101-EN-3210 | 100% |  |
|  | 11 | **Shop Drawings Approval for Road Lighting** |  | 2025-12-23 | 2026-02-28 |  |  |  |
| CON-LEG101-EN-3310 |  | Shop DWG Approval for Street Lighting General Arrangement | 6d | 2025-12-23 A | 2026-02-28 A | CON-LEG101-EN-1260 SS+3d | 100% |  |
| CON-LEG101-EN-3320 |  | Shop DWG Approval for Street Lighting Network Layout | 6d | 2025-12-23 A | 2026-02-28 A | CON-LEG101-EN-1270 SS+3d | 100% |  |
| CON-LEG101-EN-3330 |  | Shop DWG Approval for Street Lighting Details | 6d | 2025-12-23 A | 2026-02-28 A | CON-LEG101-EN-1280 SS+3d | 100% |  |
| CON-LEG101-EN-3360 |  | Shop DWG Approval for Street Lighting Single Line Diagram | 6d | 2025-12-23 A | 2026-02-28 A | CON-LEG101-EN-1290 SS+3d | 100% |  |
|  | 1 | **Shop Drawings Approval for Road Works** |  | 2025-12-08 | 2026-01-11 |  |  |  |
| CON-LEG101-EN-1570 |  | Shop DWG Approval for Topographic Survey | 15d | 2025-12-08 A | 2026-01-11 A | CON-LEG101-EN-1300 | 100% |  |
| CON-LEG101-EN-1580 |  | Shop DWG Approval for Road Layout Plan | 10d | 2025-12-08 A | 2026-01-11 A | CON-LEG101-EN-1310 | 100% |  |
| CON-LEG101-EN-1590 |  | Shop DWG Approval for Typical Cross Section | 10d | 2025-12-08 A | 2026-01-11 A | CON-LEG101-EN-1320 | 100% |  |
| CON-LEG101-EN-1600 |  | Shop DWG Approval for Road Setting Out | 10d | 2025-12-08 A | 2026-01-11 A | CON-LEG101-EN-1330 | 100% |  |
| CON-LEG101-EN-1610 |  | Shop DWG Approval for Road Profiles | 10d | 2025-12-08 A | 2026-01-11 A | CON-LEG101-EN-1340 | 100% |  |
|  | 12 | **Shop Drawings Approval for Bridge Works** |  | 2026-01-11 | 2026-01-20 |  |  |  |
| CON-LEG101-EN-1150 |  | Shop DWG Approval for Piles Setting out and Reinforcement Details | 12d | 2026-01-11 A | 2026-01-11 A | CON-LEG101-EN-1020 | 100% |  |
| CON-LEG101-EN-1160 |  | Shop DWG Approval for Abutment Setting out and Reinforcement Details | 12d | 2026-01-11 A | 2026-01-11 A | CON-LEG101-EN-1030 | 100% |  |
| CON-LEG101-EN-1170 |  | Shop DWG Approval for Pier and Pilecap Setting out and Reinforcement Details | 12d | 2026-01-11 A | 2026-01-11 A | CON-LEG101-EN-1040 | 100% |  |
| CON-LEG101-EN-1190 |  | Shop DWG Approval for Deck Slab Setting out and Reinforcement Details | 12d | 2026-01-11 A | 2026-01-11 A | CON-LEG101-EN-1060 | 100% |  |
| CON-LEG101-EN-1200 |  | Shop DWG Approval for Bearing Setting out and Details | 12d | 2026-01-11 A | 2026-01-11 A | CON-LEG101-EN-1070 | 100% |  |
| CON-LEG101-EN-1210 |  | Shop DWG Approval for Deflection Diagram | 12d | 2026-01-20 A | 2026-01-20 A | CON-LEG101-EN-1080 | 100% |  |
| CON-LEG101-EN-1220 |  | Shop DWG Approval for Appron Slab Details | 12d | 2026-01-20 A | 2026-01-20 A | CON-LEG101-EN-1090 | 100% |  |
| CON-LEG101-EN-1230 |  | Shop DWG Approval for Finishing Works Details | 12d | 2026-01-20 A | 2026-01-20 A | CON-LEG101-EN-1100 | 100% |  |
|  | 13 | **Shop Drawings Approval for Irrigation Works** |  | 2026-01-15 | 2026-01-15 |  |  |  |
| CON-LEG101-EN-3340 |  | Shop DWG Approval for Secondary Irrigation Pipe Works | 6d | 2026-01-15 A | 2026-01-15 A | CON-LEG101-EN-3220 | 100% |  |
| CON-LEG101-EN-3350 |  | Shop DWG Approval for Secondary Irrigation Valves and Controller Works | 6d | 2026-01-15 A | 2026-01-15 A | CON-LEG101-EN-3230 | 100% |  |
|  | 14 | **Shop Drawings Approval for Landscape Works** |  | 2026-01-14 | 2026-03-08 |  |  |  |
| CON-LEG101-EN-3370 |  | Shop DWG Approval for Preparation Works | 9d | 2026-01-14 A | 2026-03-08 A | CON-LEG101-EN-3240 | 100% |  |
| CON-LEG101-EN-3380 |  | Shop DWG Approval for Placing Agricutural Soil works | 9d | 2026-01-14 A | 2026-03-08 A | CON-LEG101-EN-3250 | 100% |  |
| CON-LEG101-EN-3390 |  | Shop DWG Approval for Planting Works | 9d | 2026-01-14 A | 2026-03-08 A | CON-LEG101-EN-3260 | 100% |  |
| CON-LEG101-EN-3400 |  | Shop DWG Approval for Curb Setting Out Points | 9d | 2026-01-14 A | 2026-03-08 A | CON-LEG101-EN-3270 | 100% |  |
|  | 7 | **Shop Drawings Approval forFence & Gates** |  | 2025-12-17 | 2026-01-26 |  |  |  |
| CON-LEG101-EN-3410 |  | Shop DWG Approval for the Fence & Gates - Civil Works | 9d | 2025-12-17 A | 2026-01-26 A | CON-LEG101-EN-1540 | 100% |  |
| CON-LEG101-EN-3420 |  | Shop DWG Approval for the Fence & Gates - Mechanical Works | 9d | 2025-12-17 A | 2026-01-26 A | CON-LEG101-EN-1550 | 100% |  |
| CON-LEG101-EN-3430 |  | Shop DWG Approval for the Fence & Gates - Finishing Works | 9d | 2025-12-17 A | 2026-01-26 A | CON-LEG101-EN-1560 | 100% |  |
|  | 3 | **Method Statements** |  | 2025-12-10 | 2026-02-08 |  |  |  |
|  | 1 | **Method Statements Submittal** |  | 2025-12-10 | 2026-02-07 |  |  |  |
| CON-LEG101-EN-1810 |  | Preparation & Submission of Method Statement for Earth Works | 14d | 2025-12-10 A | 2025-12-10 A | CON-LEG101-MB-1340 | 100% |  |
| CON-LEG101-EN-1820 |  | Preparation & Submission of Method Statement for Concrete Works | 14d | 2025-12-20 A | 2025-12-20 A | CON-LEG101-MB-1340, CON-LEG101-EN-1810 SS+3d | 100% |  |
| CON-LEG101-EN-1960 |  | Preparation & Submission of Method Statement for Fence and Gates | 14d | 2025-12-20 A | 2026-01-19 A | CON-LEG101-MB-1340, CON-LEG101-MS-1090 SS, CON-LEG101-EN-1820 | 100% |  |
| CON-LEG101-EN-1830 |  | Preparation & Submission of Method Statement for Waterproofing Works | 14d | 2025-12-23 A | 2025-12-23 A | CON-LEG101-MB-1340, CON-LEG101-EN-1820 SS+3d | 100% |  |
| CON-LEG101-EN-1840 |  | Preparation & Submission of Method Statement for Asphalt | 14d | 2025-12-23 A | 2025-12-23 A | CON-LEG101-MB-1340, CON-LEG101-EN-1830 | 100% |  |
| CON-LEG101-EN-1860 |  | Preparation & Submission of Method Statement for Storm Network | 14d | 2025-12-27 A | 2025-12-27 A | CON-LEG101-MB-1340, CON-LEG101-MS-1090 SS, CON-LEG101-EN-1820 SS | 100% |  |
| CON-LEG101-EN-1870 |  | Preparation & Submission of Method Statement for Sewer Network | 14d | 2025-12-28 A | 2025-12-28 A | CON-LEG101-MB-1340, CON-LEG101-MS-1090 SS, CON-LEG101-EN-1860 SS | 100% |  |
| CON-LEG101-EN-1880 |  | Preparation & Submission of Method Statement for Potable Water Network | 14d | 2025-12-28 A | 2025-12-28 A | CON-LEG101-MB-1340, CON-LEG101-MS-1090 SS, CON-LEG101-EN-1870 SS+3d | 100% |  |
| CON-LEG101-EN-1950 |  | Preparation & Submission of Method Statement for Bridge Slabs | 14d | 2025-12-29 A | 2025-12-29 A | CON-LEG101-MB-1340, CON-LEG101-MS-1090 SS, CON-LEG101-EN-1940 SS+3d | 100% |  |
| CON-LEG101-EN-1940 |  | Preparation & Submission of Method Statement for Girders & Post Tension | 14d | 2025-12-30 A | 2025-12-30 A | CON-LEG101-MB-1340, CON-LEG101-MS-1090 SS, CON-LEG101-EN-1930 SS+3d | 100% |  |
| CON-LEG101-EN-1930 |  | Preparation & Submission of Method Statement for Piles of Bridge | 14d | 2026-01-03 A | 2026-01-03 A | CON-LEG101-MB-1340, CON-LEG101-MS-1090 SS, CON-LEG101-EN-1820 SS+7d | 100% |  |
| CON-LEG101-EN-1850 |  | Preparation & Submission of Method Statement for Paving | 14d | 2026-01-04 A | 2026-01-04 A | CON-LEG101-MS-1090 SS, CON-LEG101-MB-1340, CON-LEG101-EN-1840 SS+7d | 100% |  |
| CON-LEG101-EN-1900 |  | Preparation & Submission of Method Statement for Electrical System | 14d | 2026-01-08 A | 2026-01-25 A | CON-LEG101-MB-1340, CON-LEG101-MS-1090 SS, CON-LEG101-EN-1890 SS+3d | 100% |  |
| CON-LEG101-EN-1890 |  | Preparation & Submission of Method Statement for TSE Network | 14d | 2026-01-14 A | 2026-01-14 A | CON-LEG101-MB-1340, CON-LEG101-MS-1090 SS, CON-LEG101-EN-1880 SS+3d | 100% |  |
| CON-LEG101-EN-1920 |  | Preparation & Submission of Method Statement for Telecome System | 14d | 2026-01-15 A | 2026-01-15 A | CON-LEG101-MB-1340, CON-LEG101-MS-1090 SS, CON-LEG101-EN-1910 SS | 100% |  |
| CON-LEG101-EN-1910 |  | Preparation & Submission of Method Statement for Low Current System & CCTV | 14d | 2026-02-07 A | 2026-02-07 A | CON-LEG101-MB-1340, CON-LEG101-MS-1090 SS, CON-LEG101-EN-1900 SS+3d | 100% |  |
|  | 2 | **Method Statements Approval** |  | 2025-12-20 | 2026-02-08 |  |  |  |
| CON-LEG101-EN-3440 |  | Approval of Method Statement for Earth Works | 6d | 2025-12-20 A | 2025-12-20 A | CON-LEG101-EN-1810 | 100% |  |
| CON-LEG101-EN-3460 |  | Approval of Method Statement for Waterproofing Works | 6d | 2025-12-27 A | 2025-12-27 A | CON-LEG101-EN-1830, CON-LEG101-EN-3450, CON-LEG101-EN-3510 | 100% |  |
| CON-LEG101-EN-3450 |  | Approval of Method Statement for Concrete Works | 6d | 2025-12-28 A | 2026-01-04 A | CON-LEG101-EN-1820, CON-LEG101-EN-3440 | 100% |  |
| CON-LEG101-EN-3490 |  | Approval of Method Statement for Storm Network | 6d | 2026-01-04 A | 2026-01-11 A | CON-LEG101-EN-1860, CON-LEG101-EN-3460 | 100% |  |
| CON-LEG101-EN-3560 |  | Approval of Method Statement for Piles of Bridge | 6d | 2026-01-04 A | 2026-01-04 A | CON-LEG101-EN-1930 | 100% |  |
| CON-LEG101-EN-3570 |  | Approval of Method Statement for Girders & Post Tension | 6d | 2026-01-04 A | 2026-01-04 A | CON-LEG101-EN-1940 | 100% |  |

| ID | WBS | Task | Duration | Start | Finish | Predecessors | Complete |
| --- | --- | --- | --- | --- | --- | --- | --- |
| CON-LEG101-EN-3580 |  | Approval of Method Statement for Bridge Slabs | 6d | 2026-01-04 A | 2026-01-04 A | CON-LEG101-EN-1950 | 100% |
| CON-LEG101-EN-3470 |  | Approval of Method Statement for Asphalt | 6d | 2026-01-11 A | 2026-01-11 A | CON-LEG101-EN-1840 | 100% |
| CON-LEG101-EN-3530 |  | Approval of Method Statement for Electrical System | 6d | 2026-01-11 A | 2026-01-11 A | CON-LEG101-EN-1900 | 100% |
| CON-LEG101-EN-3480 |  | Approval of Method Statement for Paving | 6d | 2026-01-13 A | 2026-01-13 A | CON-LEG101-EN-1850 | 100% |
| CON-LEG101-EN-3500 |  | Approval of Method Statement for Sewer Network | 6d | 2026-01-14 A | 2026-01-17 A | CON-LEG101-EN-1870 | 100% |
| CON-LEG101-EN-3520 |  | Approval of Method Statement for TSE Network | 6d | 2026-01-17 A | 2026-01-17 A | CON-LEG101-EN-1890, CON-LEG101-EN-3460 | 100% |
| CON-LEG101-EN-3550 |  | Approval of Method Statement for Telecome System | 6d | 2026-01-17 A | 2026-01-17 A | CON-LEG101-EN-1920 | 100% |
| CON-LEG101-EN-3510 |  | Approval of Method Statement for Potable Water Network | 6d | 2026-01-27 A | 2026-01-27 A | CON-LEG101-EN-1880, CON-LEG101-EN-3500 | 100% |
| CON-LEG101-EN-3590 |  | Approval of Method Statement for Fence and Gates | 6d | 2026-02-05 A | 2026-02-05 A | CON-LEG101-EN-1960 | 100% |
| CON-LEG101-EN-3540 |  | Approval of Method Statement for Low Current System & CCTV | 6d | 2026-02-08 A | 2026-02-08 A | CON-LEG101-EN-1910 | 100% |
|  | 4 | **Pre-qualification and Material** |  | 2025-12-01 | 2026-11-16 |  |  |
|  | 1 | **Road Works - Civil** |  | 2025-12-01 | 2026-01-24 |  |  |
|  | 1 | **Steel Reinforcement** |  | 2025-12-08 | 2025-12-14 |  |  |
| CON-LEG101-SB-4260 |  | Pre-qualification and Material Submittal for Steel Reinforcement | 5d | 2025-12-08 A | 2025-12-08 A | CON-LEG101-TP-1330, CON-LEG101-MS-1090 SS, CON-LEG101-MB-1000 SS | 100% |
| CON-LEG101-SB-4270 |  | Pre-qualification and Material Approval for Steel Reinforcement | 6d | 2025-12-09 A | 2025-12-14 A | CON-LEG101-SB-4260 | 100% |
|  | 2 | **Ready Mixed Concrete** |  | 2025-12-01 | 2026-01-01 |  |  |
| CON-LEG101-SB-4280 |  | Pre-qualification and Material Submittal for Ready Mixed Concrete | 3d | 2025-12-01 A | 2025-12-16 A | CON-LEG101-SB-4260 | 100% |
| CON-LEG101-SB-4290 |  | Pre-qualification and Material Approval for Ready Mixed Concrete | 6d | 2026-01-01 A | 2026-01-01 A | CON-LEG101-SB-4280 | 100% |
|  | 3 | **Water Proofing** |  | 2025-12-16 | 2026-01-24 |  |  |
| CON-LEG101-SB-4300 |  | Pre-qualification and Material Submittal for Water Proofing | 5d | 2025-12-16 A | 2026-01-06 A | CON-LEG101-SB-4280 | 100% |
| CON-LEG101-SB-4310 |  | Pre-qualification and Material Approval for Water Proofing | 6d | 2025-12-21 A | 2026-01-24 A | CON-LEG101-SB-4300 | 100% |
|  | 4 | **Aggregate Base Course** |  | 2025-12-01 | 2026-01-13 |  |  |
| CON-LEG101-SB-1020 |  | Pre-qualification and Material Submittal for Aggregate Base Cource | 5d | 2025-12-01 A | 2026-01-13 A | CON-LEG101-SB-4300 SS | 100% |
| CON-LEG101-SB-1030 |  | Pre-qualification and Material Approval for Aggregate Base Cource | 6d | 2025-12-02 A | 2026-01-13 A | CON-LEG101-SB-1020 | 100% |
|  | 5 | **Bituminous Base & Wearing Course** |  | 2025-12-01 | 2026-01-13 |  |  |
| CON-LEG101-SB-1060 |  | Pre-qualification and Material Submittal for Bituminous Base & Wearing Cource | 5d | 2025-12-01 A | 2026-01-13 A | CON-LEG101-SB-1020 | 100% |
| CON-LEG101-SB-1070 |  | Pre-qualification and Material Approval for Bituminous Base & Wearing Cource | 6d | 2025-12-02 A | 2026-01-13 A | CON-LEG101-SB-1060 | 100% |
|  | 7 | **Precast Concrete Kerb** |  | 2025-12-16 | 2026-01-24 |  |  |
| CON-LEG101-SB-1100 |  | Pre-qualification and Material Submittal for Precast Concrete Kerb | 5d | 2025-12-16 A | 2026-01-17 A | CON-LEG101-SB-1060 SS | 100% |
| CON-LEG101-SB-1110 |  | Pre-qualification and Material Approval for Precast Concrete Kerb | 6d | 2025-12-18 A | 2026-01-24 A | CON-LEG101-SB-1100 | 100% |
|  | 8 | **Interlocking Block Pavers** |  | 2025-12-16 | 2026-01-24 |  |  |
| CON-LEG101-SB-1140 |  | Pre-qualification and Material Submittal for Interlocking Block Pavers | 5d | 2025-12-16 A | 2026-01-17 A | CON-LEG101-SB-1100 SS | 100% |
| CON-LEG101-SB-1150 |  | Pre-qualification and Material Approval for Interlocking Block Pavers | 6d | 2025-12-18 A | 2026-01-24 A | CON-LEG101-SB-1140 | 100% |
|  | 9 | **Pavement Markings** |  | 2026-01-07 | 2026-01-18 |  |  |
| CON-LEG101-SB-1180 |  | Pre-qualification and Material Submittal for Pavement Markings | 5d | 2026-01-07 A | 2026-01-18 A | CON-LEG101-SB-1140 SS | 100% |
| CON-LEG101-SB-1190 |  | Pre-qualification and Material Approval for Pavement Markings | 6d | 2026-01-13 A | 2026-01-18 A | CON-LEG101-SB-1180 | 100% |
|  | 11 | **Handicap ramp** |  | 2026-01-07 | 2026-01-18 |  |  |
| CON-LEG101-SB-2130 |  | Pre-qualification and Material Submittal for Handicap ramp | 5d | 2026-01-07 A | 2026-01-17 A | CON-LEG101-SB-1180 SS | 100% |
| CON-LEG101-SB-2370 |  | Pre-qualification and Material Approval for Handicap ramp | 6d | 2026-01-18 A | 2026-01-18 A | CON-LEG101-SB-2130 | 100% |
|  | 10 | **Traffic Signs** |  | 2026-01-14 | 2026-01-24 |  |  |
| CON-LEG101-SB-1220 |  | Pre-qualification and Material Submittal for Traffic Signs | 5d | 2026-01-14 A | 2026-01-21 A | CON-LEG101-SB-1060 SS | 100% |
| CON-LEG101-SB-1230 |  | Pre-qualification and Material Approval for Traffic Signs | 6d | 2026-01-24 A | 2026-01-24 A | CON-LEG101-SB-1220 | 100% |
|  | 7 | **Stormwater Utilities** |  | 2025-12-11 | 2026-01-28 |  |  |
|  | 2 | **GRP Pipes** |  | 2025-12-11 | 2025-12-21 |  |  |
| CON-LEG101-SB-1580 |  | Pre-qualification and Material Submittal for GRP Pipe | 7d | 2025-12-11 A | 2025-12-11 A | CON-LEG101-MS-1090 SS, CON-LEG101-PS-1110 SS+3d | 100% |
| CON-LEG101-SB-1590 |  | Pre-qualification and Material Approval for GRP Pipe | 6d | 2025-12-11 A | 2025-12-21 A | CON-LEG101-SB-1580 | 100% |
|  | 4 | **Inlet Manholes** |  | 2025-12-11 | 2025-12-22 |  |  |
| CON-LEG101-SB-3320 |  | Pre-qualification and Material Submittal for Inlet Manholes | 4d | 2025-12-11 A | 2025-12-21 A | CON-LEG101-SB-1580 | 100% |
| CON-LEG101-SB-3330 |  | Pre-qualification and Material Approval for Inlet Manholes | 6d | 2025-12-11 A | 2025-12-22 A | CON-LEG101-SB-3320 | 100% |
|  | 1 | **UPVC Pipes** |  | 2025-12-11 | 2026-01-28 |  |  |
| CON-LEG101-SB-1540 |  | Pre-qualification and Material Submittal for UPVC Pipes | 6d | 2025-12-11 A | 2026-01-11 A | CON-LEG101-MS-1090, CON-LEG101-SB-1580 SS | 100% |
| CON-LEG101-SB-1550 |  | Pre-qualification and Material Approval for UPVC Pipes | 6d | 2025-12-11 A | 2026-01-28 A | CON-LEG101-SB-1540 | 100% |
|  | 6 | **Concrete chambers** |  | 2025-12-11 | 2025-12-22 |  |  |
| CON-LEG101-SB-1620 |  | Pre-qualification and Material Submittal for Concrete chambers | 7d | 2025-12-11 A | 2025-12-21 A | CON-LEG101-SB-1540, CON-LEG101-SB-3320 | 100% |
| CON-LEG101-SB-1630 |  | Pre-qualification and Material Approval for Concrete chambers | 6d | 2025-12-11 A | 2025-12-22 A | CON-LEG101-SB-1620 | 100% |
|  | 6 | **Sanitary Sewerage** |  | 2025-12-11 | 2025-12-28 |  |  |
|  | 1 | **GRP Pipes** |  | 2025-12-11 | 2025-12-21 |  |  |
| CON-LEG101-SB-1460 |  | Pre-qualification and Material Submittal for GRP Pipe | 7d | 2025-12-11 A | 2025-12-13 A | CON-LEG101-SB-1580 SS | 100% |
| CON-LEG101-SB-1470 |  | Pre-qualification and Material Approval for GRP Pipe | 6d | 2025-12-11 A | 2025-12-21 A | CON-LEG101-SB-1460 | 100% |
|  | 2 | **Fiberglass Manholes** |  | 2025-12-11 | 2025-12-28 |  |  |
| CON-LEG101-SB-1500 |  | Pre-qualification and Material Submittal for Fiberglass Manholes | 7d | 2025-12-11 A | 2025-12-27 A | CON-LEG101-SB-1460 | 100% |
| CON-LEG101-SB-1510 |  | Pre-qualification and Material Approval for Fiberglass Manholes | 6d | 2025-12-11 A | 2025-12-28 A | CON-LEG101-SB-1500 | 100% |
|  | 13 | **TSE Network** |  | 2025-12-13 | 2026-01-01 |  |  |
|  | 1 | **HDPE Pipe (PN 16)** |  | 2025-12-13 | 2025-12-22 |  |  |
| CON-LEG101-SB-1420 |  | Pre-qualification and Material Submittal for HDPE Pipe (PN 16) | 5d | 2025-12-13 A | 2025-12-22 A | CON-LEG101-SB-1460 | 100% |
| CON-LEG101-SB-1430 |  | Pre-qualification and Material Approval for HDPE Pipe (PN 16) | 6d | 2025-12-14 A | 2025-12-22 A | CON-LEG101-SB-1420 | 100% |
|  | 2 | **Fire Hydrant** |  | 2025-12-15 | 2026-01-01 |  |  |
| CON-LEG101-SB-2100 |  | Pre-qualification and Material Submittal for Fire Hydrant | 5d | 2025-12-15 A | 2025-12-29 A | CON-LEG101-SB-1420 | 100% |
| CON-LEG101-SB-2110 |  | Pre-qualification and Material Approval for Fire Hydrant | 6d | 2025-12-17 A | 2026-01-01 A | CON-LEG101-SB-2100 | 100% |
|  | 3 | **Valves** |  | 2025-12-15 | 2026-01-01 |  |  |

| ID | WBS | Task | Duration | Start | Finish | Predecessors | Complete |
| --- | --- | --- | --- | --- | --- | --- | --- |
| CON-LEG101-SB-2060 |  | Pre-qualification and Material Submittal for Valves | 4d | 2025-12-15 A | 2025-12-29 A | CON-LEG101-SB-2100 SS+2d | 100% |
| CON-LEG101-SB-2070 |  | Pre-qualification and Material Approval for Valves | 6d | 2025-12-17 A | 2026-01-01 A | CON-LEG101-SB-2060 | 100% |
|  | 5 | **Public Water Utility Distribution** |  | 2025-12-13 | 2026-01-01 |  |  |
|  | 1 | **HDPE Pipe (PN 16)** |  | 2025-12-13 | 2025-12-22 |  |  |
| CON-LEG101-SB-1380 |  | Pre-qualification and Material Submittal for HDPE Pipe (PN 16) | 5d | 2025-12-13 A | 2025-12-22 A | CON-LEG101-SB-1420 SS+1d | 100% |
| CON-LEG101-SB-1390 |  | Pre-qualification and Material Approval for HDPE Pipe (PN 16) | 6d | 2025-12-14 A | 2025-12-22 A | CON-LEG101-SB-1380 | 100% |
|  | 4 | **Valves** |  | 2025-12-15 | 2026-01-01 |  |  |
| CON-LEG101-SB-2020 |  | Pre-qualification and Material Submittal for Valves | 4d | 2025-12-15 A | 2025-12-29 A | CON-LEG101-SB-1380 | 100% |
| CON-LEG101-SB-2030 |  | Pre-qualification and Material Approval for Valves | 6d | 2025-12-17 A | 2026-01-01 A | CON-LEG101-SB-2020 | 100% |
|  | 2 | **Bridge Works** |  | 2025-12-30 | 2026-03-24 |  |  |
|  | 3 | **Prestressing Strands** |  | 2026-01-06 | 2026-01-31 |  |  |
| CON-LEG101-SB-3740 |  | Pre-qualification and Material Submittal for Prestressing Strands | 5d | 2026-01-06 A | 2026-01-12 A | CON-LEG101-SB-4300 SS | 100% |
| CON-LEG101-SB-3750 |  | Pre-qualification and Material Approval for Prestressing Strands | 6d | 2026-01-20 A | 2026-01-31 A | CON-LEG101-SB-3740 | 100% |
|  | 5 | **Bridge Bearings** |  | 2026-01-06 | 2026-01-31 |  |  |
| CON-LEG101-SB-3780 |  | Pre-qualification and Material Submittal for Bridge Bearings | 5d | 2026-01-06 A | 2026-01-12 A | CON-LEG101-SB-3740 | 100% |
| CON-LEG101-SB-3790 |  | Pre-qualification and Material Approval for Bridge Bearings | 6d | 2026-01-12 A | 2026-01-31 A | CON-LEG101-SB-3780 | 100% |
|  | 6 | **Expansion Joints** |  | 2026-01-07 | 2026-02-04 |  |  |
| CON-LEG101-SB-3800 |  | Pre-qualification and Material Submittal for Expansion Joints | 5d | 2026-01-07 A | 2026-01-17 A | CON-LEG101-SB-3780 SS | 100% |
| CON-LEG101-SB-3810 |  | Pre-qualification and Material Approval for Expansion Joints | 6d | 2026-01-22 A | 2026-02-04 A | CON-LEG101-SB-3800 | 100% |
|  | 4 | **New Jersey** |  | 2025-12-30 | 2026-01-01 |  |  |
| CON-LEG101-SB-3760 |  | Pre-qualification and Material Submittal for New Jersey | 5d | 2025-12-30 A | 2025-12-30 A | CON-LEG101-SB-3800 SS | 100% |
| CON-LEG101-SB-3770 |  | Pre-qualification and Material Approval for New Jersey | 6d | 2026-01-01 A | 2026-01-01 A | CON-LEG101-SB-3760 | 100% |
|  | 7 | **Guard Rail** |  | 2026-01-14 | 2026-03-24 |  |  |
| CON-LEG101-SB-3820 |  | Pre-qualification and Material Submittal for Guard Rail | 5d | 2026-01-14 A | 2026-01-22 A | CON-LEG101-SB-3760 SS | 100% |
| CON-LEG101-SB-3830 |  | Pre-qualification and Material Approval for Guard Rail | 6d | 2026-01-14 A | 2026-03-24 A | CON-LEG101-SB-3820 | 100% |
|  | 8 | **GRP Panel** |  | 2026-01-15 | 2026-03-08 |  |  |
| CON-LEG101-SB-3840 |  | Pre-qualification and Material Submittal for GRP Panel | 5d | 2026-01-15 A | 2026-01-20 A | CON-LEG101-SB-3820 SS | 100% |
| CON-LEG101-SB-3850 |  | Pre-qualification and Material Approval for GRP Panel | 6d | 2026-03-08 A | 2026-03-08 A | CON-LEG101-SB-3840 | 100% |
|  | 9 | **Logo MODON** |  | 2026-01-14 | 2026-02-07 |  |  |
| CON-LEG101-SB-3860 |  | Pre-qualification and Material Submittal for Logo MODON | 5d | 2026-01-14 A | 2026-01-20 A | CON-LEG101-SB-3840 SS | 100% |
| CON-LEG101-SB-3870 |  | Pre-qualification and Material Approval for Logo MODON | 6d | 2026-02-07 A | 2026-02-07 A | CON-LEG101-SB-3860 | 100% |
|  | 10 | **Bridge Gully (Scupper) drainage** |  | 2026-01-01 | 2026-02-05 |  |  |
| CON-LEG101-SB-3880 |  | Pre-qualification and Material Submittal for Bridge Gully (Scupper) drainage | 5d | 2026-01-01 A | 2026-02-01 A | CON-LEG101-SB-3780 SS | 100% |
| CON-LEG101-SB-3890 |  | Pre-qualification and Material Approval for Bridge Gully (Scupper) drainage | 6d | 2026-02-05 A | 2026-02-05 A | CON-LEG101-SB-3880 | 100% |
|  | 10 | **Fence & Gates** |  | 2025-12-10 | 2026-01-24 |  |  |
|  | 1 | **Metal Fence** |  | 2025-12-10 | 2026-01-06 |  |  |
| CON-LEG101-SB-2270 |  | Pre-qualification and Material Submittal for Metal Fence | 5d | 2025-12-10 A | 2026-01-05 A | CON-LEG101-MB-1000, CON-LEG101-MS-1090 SS | 100% |
| CON-LEG101-SB-2310 |  | Pre-qualification and Material Approval for Metal Fence | 6d | 2026-01-01 A | 2026-01-06 A | CON-LEG101-SB-2270 | 100% |
|  | 2 | **Gates** |  | 2025-12-10 | 2026-01-06 |  |  |
| CON-LEG101-SB-2290 |  | Pre-qualification and Material Submittal for Gates | 5d | 2025-12-10 A | 2026-01-05 A | CON-LEG101-SB-2270 SS+3d | 100% |
| CON-LEG101-SB-2330 |  | Pre-qualification and Material Approval for Gates | 6d | 2026-01-01 A | 2026-01-06 A | CON-LEG101-SB-2290 | 100% |
|  | 3 | **Paint On Cement Plaster** |  | 2025-12-16 | 2026-01-24 |  |  |
| CON-LEG101-SB-3900 |  | Pre-qualification and Material Submittal for Paint On Cement Plaster | 5d | 2025-12-16 A | 2025-12-16 A | CON-LEG101-SB-2290 | 100% |
| CON-LEG101-SB-3910 |  | Pre-qualification and Material Approval for Paint On Cement Plaster | 6d | 2026-01-06 A | 2026-01-24 A | CON-LEG101-SB-3900 | 100% |
|  | 12 | **Telecommunications** |  | 2025-12-13 | 2026-01-24 |  |  |
|  | 2 | **Pipe for the Duct** |  | 2025-12-13 | 2026-01-21 |  |  |
| CON-LEG101-SB-3340 |  | Pre-qualification and Material Submittal for Pipe for the Duct | 7d | 2025-12-13 A | 2026-01-18 A | CON-LEG101-TP-1330, CON-LEG101-MB-1000 | 100% |
| CON-LEG101-SB-3350 |  | Pre-qualification and Material Approval for Pipe for the Duct | 6d | 2025-12-14 A | 2026-01-21 A | CON-LEG101-SB-3340 | 100% |
|  | 5 | **Low Voltage Cables** |  | 2025-12-30 | 2026-01-24 |  |  |
| CON-LEG101-SB-3380 |  | Pre-qualification and Material Submittal for Low Voltage Cables | 6d | 2025-12-30 A | 2026-01-14 A | CON-LEG101-SB-3340 | 100% |
| CON-LEG101-SB-3390 |  | Pre-qualification and Material Approval for Low Voltage Cables | 6d | 2026-01-04 A | 2026-01-24 A | CON-LEG101-SB-3380 | 100% |
|  | 4 | **Manhole** |  | 2026-01-01 | 2026-01-06 |  |  |
| CON-LEG101-SB-3360 |  | Pre-qualification and Material Submittal for Manhole | 8d | 2026-01-01 A | 2026-01-01 A | CON-LEG101-SB-3380 | 100% |
| CON-LEG101-SB-3370 |  | Pre-qualification and Material Approval for Manhole | 6d | 2026-01-06 A | 2026-01-06 A | CON-LEG101-SB-3360 | 100% |
|  | 4 | **Electrical Network** |  | 2025-12-13 | 2026-11-16 |  |  |
|  | 2 | **Pipe for the Duct** |  | 2025-12-13 | 2026-01-21 |  |  |
| CON-LEG101-SB-1240 |  | Pre-qualification and Material Submittal for Pipe for the Duct | 7d | 2025-12-13 A | 2026-01-18 A | CON-LEG101-SB-3340 SS | 100% |
| CON-LEG101-SB-1270 |  | Pre-qualification and Material Approval for Pipe for the Duct | 6d | 2025-12-14 A | 2026-01-21 A | CON-LEG101-SB-1240 | 100% |
|  | 5 | **Low Voltage Cables** |  | 2025-12-30 | 2026-01-24 |  |  |
| CON-LEG101-SB-1780 |  | Pre-qualification and Material Submittal for Low Voltage Cables | 3d | 2025-12-30 A | 2026-01-14 A | CON-LEG101-SB-1240 | 100% |
| CON-LEG101-SB-1790 |  | Pre-qualification and Material Approval for Low Voltage Cables | 6d | 2026-01-04 A | 2026-01-24 A | CON-LEG101-SB-1780 | 100% |
|  | 6 | **Lighting poles** |  | 2025-12-28 | 2026-01-24 |  |  |
| CON-LEG101-SB-1820 |  | Pre-qualification and Material Submittal for Lighting poles | 5d | 2025-12-28 A | 2026-01-14 A | CON-LEG101-SB-1780 | 100% |
| CON-LEG101-SB-1830 |  | Pre-qualification and Material Approval for Lighting poles | 6d | 2026-01-04 A | 2026-01-24 A | CON-LEG101-SB-1820 | 100% |
|  | 7 | **Street Lighting Luminaire** |  | 2025-12-28 | 2026-01-24 |  |  |
| CON-LEG101-SB-1860 |  | Pre-qualification and Material Submittal for Street Lighting Luminaire | 5d | 2025-12-28 A | 2026-01-14 A | CON-LEG101-SB-1820 SS | 100% |
| CON-LEG101-SB-1870 |  | Pre-qualification and Material Approval for Street Lighting Luminaire | 6d | 2026-01-06 A | 2026-01-24 A | CON-LEG101-SB-1860 | 100% |
|  | 11 | **Medium Voltage Cable** |  | 2025-12-30 | 2026-02-05 |  |  |
| CON-LEG101-SB-1660 |  | Pre-qualification and Material Submittal for Medium Voltage Cable | 5d | 2025-12-30 A | 2026-01-28 A | CON-LEG101-SB-1860 SS | 100% |
| CON-LEG101-SB-1670 |  | Pre-qualification and Material Approval for Medium Voltage Cable | 6d | 2026-01-04 A | 2026-02-05 A | CON-LEG101-SB-1660 | 100% |

| ID | WBS | Task | Duration | Start | Finish | Predecessors | Complete | Total float |
| --- | --- | --- | --- | --- | --- | --- | --- | --- |
|  | 3 | **Cable Termination & Joints** |  | 2025-12-30 | 2026-02-05 |  |  |  |
| CON-LEG101-SB-1300 |  | Pre-qualification and Material Submittal for Cable Termination & Joints | 3d | 2025-12-30 A | 2026-01-28 A | CON-LEG101-SB-1660 SS | 100% |  |
| CON-LEG101-SB-1310 |  | Pre-qualification and Material Approval for Cable Termination & Joints | 6d | 2026-01-04 A | 2026-02-05 A | CON-LEG101-SB-1300 | 100% |  |
|  | 13 | **Ring Main Unit** |  | 2026-01-13 | 2026-11-16 |  |  |  |
| CON-LEG101-SB-1710 |  | Pre-qualification and Material Approval for Ring Main Unit | 6d | 2026-01-13 A | 2026-11-16 | CON-LEG101-SB-1700 | 30% | -39.7d |
| CON-LEG101-SB-1700 |  | Pre-qualification and Material Submittal for Ring Main Unit | 3d | 2026-01-14 A | 2026-01-14 A | CON-LEG101-SB-1300 SS | 100% |  |
|  | 14 | **Street Lighting Sub-station** |  | 2026-01-13 | 2026-11-16 |  |  |  |
| CON-LEG101-SB-1750 |  | Pre-qualification and Material Approval for Street Lighting Sub-station | 6d | 2026-01-13 A | 2026-11-16 | CON-LEG101-SB-1740 | 30% | -34.7d |
| CON-LEG101-SB-1740 |  | Pre-qualification and Material Submittal for Street Lighting Sub-station | 3d | 2026-01-14 A | 2026-01-14 A | CON-LEG101-SB-1700 SS | 100% |  |
|  | 4 | **Earthing System** |  | 2026-01-14 | 2026-01-21 |  |  |  |
| CON-LEG101-SB-1340 |  | Pre-qualification and Material Submittal for Earthing System | 3d | 2026-01-14 A | 2026-01-14 A | CON-LEG101-SB-1740 SS | 100% |  |
| CON-LEG101-SB-1350 |  | Pre-qualification and Material Approval for Earthing System | 6d | 2026-01-21 A | 2026-01-21 A | CON-LEG101-SB-1340 | 100% |  |
|  | 1 | **Lighting panels** |  | 2026-01-13 | 2026-04-15 |  |  |  |
| CON-LEG101-SB-2430 |  | Pre-qualification and Material Approval for Lighting panels | 6d | 2026-01-13 A | 2026-04-15 A | CON-LEG101-SB-2390 | 100% |  |
| CON-LEG101-SB-2390 |  | Pre-qualification and Material Submittal for Lighting panels | 3d | 2026-01-14 A | 2026-01-14 A | CON-LEG101-SB-1340 SS | 100% |  |
|  | 8 | **System for KWHM** |  | 2026-01-13 | 2026-04-15 |  |  |  |
| CON-LEG101-SB-1910 |  | Pre-qualification and Material Approval for System for KWHM | 6d | 2026-01-13 A | 2026-04-15 A | CON-LEG101-SB-1900 | 100% |  |
| CON-LEG101-SB-1900 |  | Pre-qualification and Material Submittal for System for KWHM | 3d | 2026-01-14 A | 2026-01-14 A | CON-LEG101-SB-2390 SS | 100% |  |
|  | 9 | **Feeder Piller** |  | 2026-01-13 | 2026-04-15 |  |  |  |
| CON-LEG101-SB-1950 |  | Pre-qualification and Material Approval for Feeder Piller | 6d | 2026-01-13 A | 2026-04-15 A | CON-LEG101-SB-1940 | 100% |  |
| CON-LEG101-SB-1940 |  | Pre-qualification and Material Submittal for Feeder Piller | 3d | 2026-01-14 A | 2026-01-14 A | CON-LEG101-SB-1900 SS | 100% |  |
|  | 10 | **Street Lighting Panels** |  | 2026-01-14 | 2026-04-15 |  |  |  |
| CON-LEG101-SB-1980 |  | Pre-qualification and Material Submittal for Street Lighting Panels | 3d | 2026-01-14 A | 2026-01-14 A | CON-LEG101-SB-1940 SS | 100% |  |
| CON-LEG101-SB-1990 |  | Pre-qualification and Material Approval for Street Lighting Panels | 6d | 2026-01-14 A | 2026-04-15 A | CON-LEG101-SB-1980 | 100% |  |
|  | 8 | **CCTV feeding system and GSM** |  | 2026-01-12 | 2026-04-05 |  |  |  |
|  | 2 | **Fiber Optic Patch Panel 12 port** |  | 2026-01-12 | 2026-04-05 |  |  |  |
| CON-LEG101-SB-3400 |  | Pre-qualification and Material Submittal for Fiber Optic Patch Panel 12 port | 6d | 2026-01-12 A | 2026-01-15 A | CON-LEG101-SB-1780 SS | 100% |  |
| CON-LEG101-SB-3410 |  | Pre-qualification and Material Approval for Fiber Optic Patch Panel 12 port | 6d | 2026-01-20 A | 2026-04-05 A | CON-LEG101-SB-3400 | 100% |  |
|  | 5 | **Modular Industrial Switches for main pole** |  | 2026-01-12 | 2026-04-05 |  |  |  |
| CON-LEG101-SB-3500 |  | Pre-qualification and Material Submittal for Modular Industrial Switches for main pole | 3d | 2026-01-12 A | 2026-01-15 A | CON-LEG101-SB-3400 | 100% |  |
| CON-LEG101-SB-3510 |  | Pre-qualification and Material Approval for Modular Industrial Switches for main pole | 6d | 2026-01-20 A | 2026-04-05 A | CON-LEG101-SB-3500 | 100% |  |
|  | 11 | **8POE ports Industrial Switches for remote poles** |  | 2026-01-12 | 2026-04-05 |  |  |  |
| CON-LEG101-SB-3440 |  | Pre-qualification and Material Submittal for 8POE ports Industrial Switches for remote poles | 5d | 2026-01-12 A | 2026-01-15 A | CON-LEG101-SB-3500 | 100% |  |
| CON-LEG101-SB-3450 |  | Pre-qualification and Material Approval for 8POE ports Industrial Switches for remote poles | 6d | 2026-01-20 A | 2026-04-05 A | CON-LEG101-SB-3440 | 100% |  |
|  | 3 | **Core Switch** |  | 2026-01-12 | 2026-04-05 |  |  |  |
| CON-LEG101-SB-3420 |  | Pre-qualification and Material Submittal for Core Switch | 5d | 2026-01-12 A | 2026-01-15 A | CON-LEG101-SB-3440 SS | 100% |  |
| CON-LEG101-SB-3430 |  | Pre-qualification and Material Approval for Core Switch | 6d | 2026-01-20 A | 2026-04-05 A | CON-LEG101-SB-3420 | 100% |  |
|  | 13 | **Access Switch 48 port** |  | 2026-01-12 | 2026-04-05 |  |  |  |
| CON-LEG101-SB-3460 |  | Pre-qualification and Material Submittal for Access Switch 48 port | 5d | 2026-01-12 A | 2026-01-15 A | CON-LEG101-SB-3420 SS | 100% |  |
| CON-LEG101-SB-3470 |  | Pre-qualification and Material Approval for Access Switch 48 port | 6d | 2026-01-20 A | 2026-04-05 A | CON-LEG101-SB-3460 | 100% |  |
|  | 14 | **Server** |  | 2026-01-12 | 2026-04-05 |  |  |  |
| CON-LEG101-SB-3480 |  | Pre-qualification and Material Submittal for Server | 5d | 2026-01-12 A | 2026-01-15 A | CON-LEG101-SB-3460 SS | 100% |  |
| CON-LEG101-SB-3490 |  | Pre-qualification and Material Approval for Server | 6d | 2026-01-20 A | 2026-04-05 A | CON-LEG101-SB-3480 | 100% |  |
|  | 6 | **Stand rack 42U- 19"** |  | 2026-01-12 | 2026-04-05 |  |  |  |
| CON-LEG101-SB-3520 |  | Pre-qualification and Material Submittal for Stand rack 42U- 19" | 5d | 2026-01-12 A | 2026-01-15 A | CON-LEG101-SB-3480 SS | 100% |  |
| CON-LEG101-SB-3530 |  | Pre-qualification and Material Approval for Stand rack 42U- 19" | 6d | 2026-01-20 A | 2026-04-05 A | CON-LEG101-SB-3520 | 100% |  |
|  | 1 | **IP Outdoor CCTV POE Camera,5 MP, Metal Housing** |  | 2026-01-12 | 2026-04-05 |  |  |  |
| CON-LEG101-SB-3620 |  | Pre-qualification and Material Submittal for IP Outdoor CCTV POE Camera,5 MP, Metal Housing | 5d | 2026-01-12 A | 2026-01-15 A | CON-LEG101-SB-3520 SS | 100% |  |
| CON-LEG101-SB-3630 |  | Pre-qualification and Material Approval for IP Outdoor CCTV POE Camera,5 MP, Metal Housing | 6d | 2026-01-20 A | 2026-04-05 A | CON-LEG101-SB-3620 | 100% |  |
|  | 7 | **Outdoor PTZ with IR, HDTV 1080 and 31x optical, 12x digital** |  | 2026-01-12 | 2026-04-05 |  |  |  |
| CON-LEG101-SB-3540 |  | Pre-qualification and Material Submittal for Outdoor PTZ with IR, HDTV 1080 and 31x optical, 12x digital | 5d | 2026-01-12 A | 2026-01-15 A | CON-LEG101-SB-3620 SS | 100% |  |
| CON-LEG101-SB-3550 |  | Pre-qualification and Material Approval for Outdoor PTZ with IR, HDTV 1080 and 31x optical, 12x digital | 6d | 2026-01-20 A | 2026-04-05 A | CON-LEG101-SB-3540 | 100% |  |
|  | 8 | **Security workstation with 1 x 19" LED screen** |  | 2026-01-12 | 2026-04-05 |  |  |  |
| CON-LEG101-SB-3560 |  | Pre-qualification and Material Submittal for Security workstation with 1 x 19" LED screen | 5d | 2026-01-12 A | 2026-01-15 A | CON-LEG101-SB-3540 SS | 100% |  |
| CON-LEG101-SB-3570 |  | Pre-qualification and Material Approval for Security workstation with 1 x 19" LED screen | 6d | 2026-01-20 A | 2026-04-05 A | CON-LEG101-SB-3560 | 100% |  |
|  | 9 | **LED Screen 43" (24/7 operation) with Ethernet decoders** |  | 2026-01-12 | 2026-04-05 |  |  |  |
| CON-LEG101-SB-3580 |  | Pre-qualification and Material Submittal for LED Screen 43" (24/7 operation) with Ethernet decoders | 5d | 2026-01-12 A | 2026-01-15 A | CON-LEG101-SB-3560 SS | 100% |  |
| CON-LEG101-SB-3590 |  | Pre-qualification and Material Approval for LED Screen 43" (24/7 operation) with Ethernet decoders | 6d | 2026-01-20 A | 2026-04-05 A | CON-LEG101-SB-3580 | 100% |  |
|  | 10 | **Network Video Recorder 4k 64 Channel** |  | 2026-01-12 | 2026-04-05 |  |  |  |
| CON-LEG101-SB-3600 |  | Pre-qualification and Material Submittal for Network Video Recorder 4k 64 Channel | 5d | 2026-01-12 A | 2026-01-15 A | CON-LEG101-SB-3580 SS | 100% |  |
| CON-LEG101-SB-3610 |  | Pre-qualification and Material Approval for Network Video Recorder 4k 64 Channel | 6d | 2026-01-20 A | 2026-04-05 A | CON-LEG101-SB-3600 | 100% |  |
|  | 12 | **Keypad** |  | 2026-01-12 | 2026-04-05 |  |  |  |
| CON-LEG101-SB-3640 |  | Pre-qualification and Material Submittal for Keypad | 5d | 2026-01-12 A | 2026-01-15 A | CON-LEG101-SB-3600 SS | 100% |  |
| CON-LEG101-SB-3650 |  | Pre-qualification and Material Approval for Keypad | 6d | 2026-01-20 A | 2026-04-05 A | CON-LEG101-SB-3640 | 100% |  |
|  | 15 | **Horizontal Power Distribution Unit (min 8 outlets)** |  | 2026-01-12 | 2026-04-05 |  |  |  |
| CON-LEG101-SB-3660 |  | Pre-qualification and Material Submittal for Horizontal Power Distribution Unit (min 8 outlets) | 5d | 2026-01-12 A | 2026-01-15 A | CON-LEG101-SB-3640 SS | 100% |  |
| CON-LEG101-SB-3670 |  | Pre-qualification and Material Approval for Horizontal Power Distribution Unit (min 8 outlets) | 6d | 2026-01-20 A | 2026-04-05 A | CON-LEG101-SB-3660 | 100% |  |
|  | 16 | **35 Meters mono pole with Double Platform for Access Points** |  | 2026-01-12 | 2026-04-05 |  |  |  |
| CON-LEG101-SB-3680 |  | Pre-qualification and Material Submittal for 35 Meters mono pole with Double Platform for Access Points | 5d | 2026-01-12 A | 2026-01-15 A | CON-LEG101-SB-3660 SS | 100% |  |
| CON-LEG101-SB-3690 |  | Pre-qualification and Material Approval for 35 Meters mono pole with Double Platform for Access Points | 6d | 2026-01-20 A | 2026-04-05 A | CON-LEG101-SB-3680 | 100% |  |

| ID | WBS | Task | Duration | Start | Finish | Predecessors | Complete |
| --- | --- | --- | --- | --- | --- | --- | --- |
|  | 17 | **25 Meters pole for CCTV Cameras** |  | 2026-01-12 | 2026-04-05 |  |  |
| CON-LEG101-SB-3700 |  | Pre-qualification and Material Submittal for 25 Meters pole for CCTV Cameras | 5d | 2026-01-12 A | 2026-01-15 A | CON-LEG101-SB-3680 SS | 100% |
| CON-LEG101-SB-3710 |  | Pre-qualification and Material Approval for 25 Meters pole for CCTV Cameras | 6d | 2026-01-20 A | 2026-04-05 A | CON-LEG101-SB-3700 | 100% |
|  | 18 | **Short Range wireless point to point wireless bridge** |  | 2026-01-12 | 2026-04-05 |  |  |
| CON-LEG101-SB-3720 |  | Pre-qualification and Material Submittal for Short Range wireless point to point wireless bridge | 5d | 2026-01-12 A | 2026-01-15 A | CON-LEG101-SB-3700 SS | 100% |
| CON-LEG101-SB-3730 |  | Pre-qualification and Material Approval for Short Range wireless point to point wireless bridge | 6d | 2026-01-20 A | 2026-04-05 A | CON-LEG101-SB-3720 | 100% |
|  | 11 | **Irrigation Works** |  | 2026-01-03 | 2026-02-19 |  |  |
|  | 2 | **16 mm dia (O.D.) linear low density polyethylene tubing** |  | 2026-01-03 | 2026-01-06 |  |  |
| CON-LEG101-SB-3930 |  | Pre-qualification and Material Submittal for Steel Fence for 16 mm dia (O.D.) linear low density polyethylene tubing | 5d | 2026-01-03 A | 2026-01-03 A | CON-LEG101-SB-1420 | 100% |
| CON-LEG101-SB-3950 |  | Pre-qualification and Material Approval for Steel Fence for 16 mm dia (O.D.) linear low density polyethylene tubing | 6d | 2026-01-06 A | 2026-01-06 A | CON-LEG101-SB-3930 | 100% |
|  | 3 | **Irrigation Controller** |  | 2026-01-13 | 2026-02-19 |  |  |
| CON-LEG101-SB-3960 |  | Pre-qualification and Material Submittal for Steel Fence for Irrigation Controller | 5d | 2026-01-13 A | 2026-01-13 A | CON-LEG101-SB-3930 SS+2d | 100% |
| CON-LEG101-SB-3970 |  | Pre-qualification and Material Approval for Steel Fence for Irrigation Controller | 6d | 2026-01-20 A | 2026-02-19 A | CON-LEG101-SB-3960 | 100% |
|  | 4 | **Single station decoder** |  | 2026-01-13 | 2026-02-19 |  |  |
| CON-LEG101-SB-3980 |  | Pre-qualification and Material Submittal for Steel Fence for Single station decoder | 5d | 2026-01-13 A | 2026-01-13 A | CON-LEG101-SB-3960 SS+1d | 100% |
| CON-LEG101-SB-3990 |  | Pre-qualification and Material Approval for Steel Fence for Single station decoder | 6d | 2026-01-20 A | 2026-02-19 A | CON-LEG101-SB-3980 | 100% |
|  | 5 | **Decoder cables 12 AWG** |  | 2026-01-13 | 2026-02-19 |  |  |
| CON-LEG101-SB-4000 |  | Pre-qualification and Material Submittal for Steel Fence for Decoder cables 12 AWG | 5d | 2026-01-13 A | 2026-01-13 A | CON-LEG101-SB-3980 SS+1d | 100% |
| CON-LEG101-SB-4010 |  | Pre-qualification and Material Approval for Steel Fence for Decoder cables 12 AWG | 6d | 2026-01-26 A | 2026-02-19 A | CON-LEG101-SB-4000 | 100% |
|  | 1 | **Flush valve** |  | 2026-01-13 | 2026-02-19 |  |  |
| CON-LEG101-SB-3920 |  | Pre-qualification and Material Submittal for Steel Gate for Flush valve | 5d | 2026-01-13 A | 2026-01-13 A | CON-LEG101-SB-4000 SS | 100% |
| CON-LEG101-SB-3940 |  | Pre-qualification and Material Approval for Steel Gate for Flush valve | 6d | 2026-01-20 A | 2026-02-19 A | CON-LEG101-SB-3920 | 100% |
|  | 9 | **Landscape Works** |  | 2025-12-11 | 2026-03-02 |  |  |
|  | 1 | **HDPE Pipes** |  | 2025-12-11 | 2025-12-22 |  |  |
| CON-LEG101-SB-4020 |  | Pre-qualification and Material Submittal for HDPE Pipes | 3d | 2025-12-11 A | 2025-12-22 A | CON-LEG101-SB-3930 SS | 100% |
| CON-LEG101-SB-4040 |  | Pre-qualification and Material Approval for HDPE Pipes | 6d | 2025-12-13 A | 2025-12-22 A | CON-LEG101-SB-4020 | 100% |
|  | 7 | **Decoder Cables** |  | 2026-01-13 | 2026-02-19 |  |  |
| CON-LEG101-SB-4140 |  | Pre-qualification and Material Submittal for Decoder Cables | 3d | 2026-01-13 A | 2026-01-13 A | CON-LEG101-SB-4020 | 100% |
| CON-LEG101-SB-4150 |  | Pre-qualification and Material Approval for Decoder Cables | 6d | 2026-01-20 A | 2026-02-19 A | CON-LEG101-SB-4140 | 100% |
|  | 9 | **Curbs and edging** |  | 2025-12-27 | 2026-02-16 |  |  |
| CON-LEG101-SB-4180 |  | Pre-qualification and Material Submittal for Curbs and edging | 3d | 2025-12-27 A | 2026-02-15 A | CON-LEG101-SB-4140 SS | 100% |
| CON-LEG101-SB-4190 |  | Pre-qualification and Material Approval for Curbs and edging | 6d | 2025-12-30 A | 2026-02-16 A | CON-LEG101-SB-4180 | 100% |
|  | 2 | **Electrical Solenoid Valve** |  | 2026-01-13 | 2026-02-19 |  |  |
| CON-LEG101-SB-4030 |  | Pre-qualification and Material Submittal for Electrical Solenoid Valve | 3d | 2026-01-13 A | 2026-01-13 A | CON-LEG101-SB-4140 SS | 100% |
| CON-LEG101-SB-4050 |  | Pre-qualification and Material Approval for Electrical Solenoid Valve | 6d | 2026-01-20 A | 2026-02-19 A | CON-LEG101-SB-4030 | 100% |
|  | 3 | **Quick coupler valve** |  | 2026-01-13 | 2026-02-19 |  |  |
| CON-LEG101-SB-4060 |  | Pre-qualification and Material Submittal for Quick coupler valve | 3d | 2026-01-13 A | 2026-01-13 A | CON-LEG101-SB-4030 SS | 100% |
| CON-LEG101-SB-4070 |  | Pre-qualification and Material Approval for Quick coupler valve | 6d | 2026-01-20 A | 2026-02-19 A | CON-LEG101-SB-4060 | 100% |
|  | 4 | **Flush valve** |  | 2026-01-13 | 2026-02-19 |  |  |
| CON-LEG101-SB-4080 |  | Pre-qualification and Material Submittal for Flush valve | 3d | 2026-01-13 A | 2026-01-13 A | CON-LEG101-SB-4060 SS | 100% |
| CON-LEG101-SB-4090 |  | Pre-qualification and Material Approval for Flush valve | 6d | 2026-01-20 A | 2026-02-19 A | CON-LEG101-SB-4080 | 100% |
|  | 5 | **Irrigation controller** |  | 2026-01-13 | 2026-02-19 |  |  |
| CON-LEG101-SB-4100 |  | Pre-qualification and Material Submittal for Irrigation controller | 3d | 2026-01-13 A | 2026-01-13 A | CON-LEG101-SB-4080 SS | 100% |
| CON-LEG101-SB-4110 |  | Pre-qualification and Material Approval for Irrigation controller | 6d | 2026-01-20 A | 2026-02-19 A | CON-LEG101-SB-4100 | 100% |
|  | 6 | **Decoder for valve** |  | 2026-01-13 | 2026-02-19 |  |  |
| CON-LEG101-SB-4120 |  | Pre-qualification and Material Submittal for Decoder for valve | 3d | 2026-01-13 A | 2026-01-13 A | CON-LEG101-SB-4100 SS | 100% |
| CON-LEG101-SB-4130 |  | Pre-qualification and Material Approval for Decoder for valve | 6d | 2026-01-20 A | 2026-02-19 A | CON-LEG101-SB-4120 | 100% |
|  | 8 | **Shrubs And Ground Cover** |  | 2026-01-13 | 2026-03-02 |  |  |
| CON-LEG101-SB-4160 |  | Pre-qualification and Material Submittal for agricultural soil | 3d | 2026-01-13 A | 2026-01-13 A | CON-LEG101-SB-4120 SS | 100% |
| CON-LEG101-SB-4170 |  | Pre-qualification and Material Approval for agricultural soil | 6d | 2026-01-22 A | 2026-03-02 A | CON-LEG101-SB-4160 | 100% |
|  | 4 | **Procurement** |  | 2025-11-25 | 2027-09-04 |  |  |
|  | 2 | **Short Lead Item** |  | 2025-11-25 | 2027-09-04 |  |  |
|  | 1 | **Road Works - Civil** |  | 2025-11-25 | 2027-09-04 |  |  |
|  | 1 | **Steel Reinforcement** |  | 2025-12-02 | 2026-04-02 |  |  |
| CON-LEG101-PR-1390 |  | PO for Steel Reinforcement | 3d | 2025-12-02 A | 2025-12-02 A | CON-LEG101-SB-4270 | 100% |
| CON-LEG101-PR-1410 |  | Material Delivery for Steel Reinforcement | 21d | 2025-12-16 A | 2026-04-02 A | CON-LEG101-PR-1390 | 100% |
|  | 2 | **Ready Mixed Concrete** |  | 2025-12-17 | 2026-03-31 |  |  |
| CON-LEG101-PR-1420 |  | PO for Ready Mixed Concrete | 5d | 2025-12-17 A | 2025-12-17 A | CON-LEG101-SB-4290 | 100% |
| CON-LEG101-PR-1430 |  | Material Delivery for Ready Mixed Concrete | 21d | 2025-12-21 A | 2026-03-31 A | CON-LEG101-PR-1410, CON-LEG101-PR-1420 | 100% |
|  | 4 | **Backfilling Materials** |  | 2025-11-25 | 2026-03-31 |  |  |
| CON-LEG101-PR-3990 |  | PO for Backfilling Materials | 5d | 2025-11-25 A | 2025-11-25 A | CON-LEG101-MS-1090 SS, CON-LEG101-MB-1160, CON-LEG101-PR-1420 | 100% |
| CON-LEG101-PR-4000 |  | Material Delivery for Backfilling Materials | 21d | 2025-12-01 A | 2026-03-31 A | CON-LEG101-PR-3990, CON-LEG101-PR-1430 SS+7d, CON-LEG101-MS-1100 | 100% |
|  | 5 | **Aggregate Base Course** |  | 2025-12-20 | 2026-05-21 |  |  |
| CON-LEG101-PR-1470 |  | PO for Aggregate Base Course | 5d | 2025-12-20 A | 2025-12-20 A | CON-LEG101-SB-1030, CON-LEG101-PR-3990 | 100% |
| CON-LEG101-PR-1490 |  | Material Delivery for Aggregate Base Course | 21d | 2026-01-15 A | 2026-05-21 A | CON-LEG101-PR-1470, CON-LEG101-PR-2570, CON-LEG101-PR-2560 | 100% |
|  | 7 | **Precast Concrete Kerb** |  | 2026-02-01 | 2026-07-23 |  |  |
| CON-LEG101-PR-1520 |  | PO for Precast Concrete Kerb | 5d | 2026-02-01 A | 2026-02-02 A | CON-LEG101-SB-1110 | 100% |
| CON-LEG101-PR-1540 |  | Material Delivery for Precast Concrete Kerb | 21d | 2026-05-02 A | 2026-07-23 A | CON-LEG101-PR-1520, CON-LEG101-PR-1510, CON-LEG101-LR-7980 | 100% |
|  | 8 | **Interlocking Block Pavers** |  | 2026-06-11 | 2026-07-30 |  |  |
| CON-LEG101-PR-1550 |  | PO for Interlocking Block Pavers | 5d | 2026-06-11 A | 2026-06-11 A | CON-LEG101-SB-1150 | 100% |

| ID | WBS | Task | Duration | Start | Finish | Predecessors | Complete | Total float |
| --- | --- | --- | --- | --- | --- | --- | --- | --- |
| CON-LEG101-PR-1570 |  | Material Delivery for Interlocking Block Pavers | 21d | 2026-06-13 A | 2026-07-30 A | CON-LEG101-PR-1550, CON-LEG101-PR-1540 SS | 100% |  |
|  | 3 | **Water Proofing** |  | 2026-01-03 | 2026-03-05 |  |  |  |
| CON-LEG101-PR-1460 |  | Material Delivery for Water Proofing | 21d | 2026-01-03 A | 2026-03-05 A | CON-LEG101-PR-1440, CON-LEG101-PR-1410, CON-LEG101-PR-1430 | 100% |  |
| CON-LEG101-PR-1440 |  | PO for Water Proofing | 5d | 2026-01-03 A | 2026-01-03 A | CON-LEG101-SB-4310 | 100% |  |
|  | 10 | **Handicap ramp** |  | 2026-04-02 | 2026-06-10 |  |  |  |
| CON-LEG101-PR-2580 |  | PO for Handicap ramp | 5d | 2026-04-02 A | 2026-04-02 A | CON-LEG101-SB-2370, CON-LEG101-PR-1440 | 100% |  |
| CON-LEG101-PR-2600 |  | Material Delivery for Handicap ramp | 15d | 2026-06-10 A | 2026-06-10 A | CON-LEG101-PR-2580, CON-LEG101-PR-1630 SS, CON-LEG101-PR-1600 SS | 100% |  |
|  | 9 | **Pavement Markings** |  | 2026-04-02 | 2027-09-04 |  |  |  |
| CON-LEG101-PR-1580 |  | PO for Pavement Markings | 5d | 2026-04-02 A | 2026-04-02 A | CON-LEG101-SB-1190 | 100% |  |
| CON-LEG101-PR-1600 |  | Material Delivery for Pavement Markings | 15d | 2027-08-12 | 2027-08-30 | CON-LEG101-PR-1580, CON-LEG101-PR-1510 SS+7d, CON-LEG101-PR-1530 SS |  | -77.25d |
| CON-LEG101-PR-2070 |  | Staging Time for Pavement Markings | 4d | 2027-08-30 | 2027-09-04 | CON-LEG101-PR-1600, CON-LEG101-PR-2600 |  | -77.25d |
|  | 6 | **Bituminous Base & Wearing Course** |  | 2025-12-20 | 2027-08-15 |  |  |  |
| CON-LEG101-PR-1500 |  | PO for Bituminous Base & Wearing Course | 5d | 2025-12-20 A | 2025-12-20 A | CON-LEG101-SB-1070 | 100% |  |
| CON-LEG101-PR-1510 |  | Material Delivery for Bituminous Base Course | 21d | 2026-05-19 A | 2026-08-11 A | CON-LEG101-PR-1490, CON-LEG101-PR-1500 | 100% |  |
| CON-LEG101-PR-1530 |  | Material Delivery for Wearing Course | 21d | 2026-09-29 A | 2027-08-15 | CON-LEG101-PR-1510, CON-LEG101-LR-6180 | 91% | -77.25d |
|  | 1 | **Long Lead Item** |  | 2025-12-09 | 2027-07-03 |  |  |  |
|  | 12 | **Sanitary Sewerage** |  | 2025-12-17 | 2026-04-13 |  |  |  |
|  | 1 | **GRP Pipes** |  | 2025-12-17 | 2026-04-13 |  |  |  |
| CON-LEG101-PR-1700 |  | PO for GRP Pipes for Sewer network | 3d | 2025-12-17 A | 2025-12-17 A | CON-LEG101-SB-1470 | 100% |  |
| CON-LEG101-PR-1710 |  | Material Fabrication for GRP Pipes for Sewer network | 75d | 2025-12-18 A | 2026-03-15 A | CON-LEG101-PR-1700 | 100% |  |
| CON-LEG101-PR-1720 |  | Material Delivery for GRP Pipes for Sewer network | 15d | 2025-12-29 A | 2026-04-12 A | CON-LEG101-PR-1710 | 100% |  |
| CON-LEG101-PR-2560 |  | Staging Time for GRP Pipes for Sewer network | 10d | 2025-12-30 A | 2026-04-13 A | CON-LEG101-PR-1720 | 100% |  |
|  | 2 | **Fiberglass Manholes** |  | 2025-12-29 | 2026-04-04 |  |  |  |
| CON-LEG101-PR-1730 |  | PO for Fiberglass Manholes for Sewer network | 5d | 2025-12-29 A | 2025-12-30 A | CON-LEG101-SB-1510, CON-LEG101-PR-1700 | 100% |  |
| CON-LEG101-PR-1740 |  | Material Fabrication for Fiberglass Manholes for Sewer network | 75d | 2025-12-31 A | 2026-01-28 A | CON-LEG101-PR-1730 | 100% |  |
| CON-LEG101-PR-1750 |  | Material Delivery for Fiberglass Manholes for Sewer network | 15d | 2026-01-20 A | 2026-04-02 A | CON-LEG101-PR-1740 | 100% |  |
| CON-LEG101-PR-2570 |  | Staging Time for Fiberglass Manholes for Sewer network | 10d | 2026-01-20 A | 2026-04-04 A | CON-LEG101-PR-1750 | 100% |  |
|  | 3 | **TSE Network** |  | 2026-01-01 | 2026-04-23 |  |  |  |
|  | 3 | **HDPE Pipe (PN 16)** |  | 2026-01-01 | 2026-04-01 |  |  |  |
| CON-LEG101-PR-1670 |  | PO for HDPE Pipe (PN 16) for TSE | 5d | 2026-01-01 A | 2026-01-01 A | CON-LEG101-SB-1430 | 100% |  |
| CON-LEG101-PR-1680 |  | Material Fabrication for HDPE Pipe (PN 16) for TSE | 75d | 2026-01-03 A | 2026-03-25 A | CON-LEG101-PR-1670 | 100% |  |
| CON-LEG101-PR-1690 |  | Material Delivery for HDPE Pipe (PN 16) for TSE | 15d | 2026-01-04 A | 2026-03-31 A | CON-LEG101-PR-2560, CON-LEG101-PR-1680 | 100% |  |
| CON-LEG101-PR-2590 |  | Staging Time for HDPE Pipe (PN 16) for TSE | 10d | 2026-01-05 A | 2026-04-01 A | CON-LEG101-PR-1690 | 100% |  |
|  | 1 | **Valves** |  | 2026-01-28 | 2026-03-29 |  |  |  |
| CON-LEG101-PR-1360 |  | PO for Valves for TSE | 5d | 2026-01-28 A | 2026-01-28 A | CON-LEG101-SB-2070 | 100% |  |
| CON-LEG101-PR-1370 |  | Material Fabrication for Valves for TSE | 90d | 2026-01-29 A | 2026-02-02 A | CON-LEG101-PR-1360 | 100% |  |
| CON-LEG101-PR-1380 |  | Material Delivery for Valves for TSE | 15d | 2026-02-03 A | 2026-03-28 A | CON-LEG101-PR-2590, CON-LEG101-PR-1370 | 100% |  |
| CON-LEG101-PR-1970 |  | Staging Time for Valves for TSE | 10d | 2026-02-04 A | 2026-03-29 A | CON-LEG101-PR-1380, CON-LEG101-PR-1490 | 100% |  |
|  | 2 | **Fire Hydrant** |  | 2026-01-28 | 2026-04-23 |  |  |  |
| CON-LEG101-PR-2440 |  | PO for Fire Hydrant | 3d | 2026-01-28 A | 2026-01-28 A | CON-LEG101-SB-2110 | 100% |  |
| CON-LEG101-PR-2450 |  | Material Fabrication for Fire Hydrant | 120d | 2026-01-29 A | 2026-02-02 A | CON-LEG101-PR-2440, CON-LEG101-PR-4000 | 100% |  |
| CON-LEG101-PR-2460 |  | Material Delivery for Fire Hydrant | 20d | 2026-02-03 A | 2026-04-22 A | CON-LEG101-PR-1970, CON-LEG101-PR-2450, CON-LEG101-PR-1510 | 100% |  |
| CON-LEG101-PR-2470 |  | Staging Time for Fire Hydrant | 10d | 2026-02-04 A | 2026-04-23 A | CON-LEG101-PR-2460 | 100% |  |
|  | 5 | **Stormwater Utilities** |  | 2025-12-09 | 2026-04-13 |  |  |  |
|  | 2 | **GRP Pipes** |  | 2025-12-09 | 2026-04-13 |  |  |  |
| CON-LEG101-PR-1790 |  | PO for GRP Pipes for Storm network | 3d | 2025-12-09 A | 2025-12-09 A | CON-LEG101-SB-1590 | 100% |  |
| CON-LEG101-PR-1800 |  | Material Fabrication for GRP Pipes for Storm network | 75d | 2025-12-10 A | 2026-03-12 A | CON-LEG101-PR-1790 | 100% |  |
| CON-LEG101-PR-1810 |  | Material Delivery for GRP Pipes for Storm network | 14d | 2025-12-16 A | 2026-04-12 A | CON-LEG101-PR-1800 | 100% |  |
| CON-LEG101-PR-2100 |  | Staging Time for GRP Pipes for Storm network | 10d | 2025-12-20 A | 2026-04-13 A | CON-LEG101-PR-1810 | 100% |  |
|  | 1 | **UPVC Pipes** |  | 2026-01-28 | 2026-04-02 |  |  |  |
| CON-LEG101-PR-1760 |  | PO for UPVC Pipes | 3d | 2026-01-28 A | 2026-01-28 A | CON-LEG101-SB-1550 | 100% |  |
| CON-LEG101-PR-1770 |  | Material Fabrication for UPVC Pipes | 75d | 2026-01-29 A | 2026-03-29 A | CON-LEG101-PR-1760 | 100% |  |
| CON-LEG101-PR-1780 |  | Material Delivery for UPVC Pipes | 15d | 2026-01-31 A | 2026-04-01 A | CON-LEG101-PR-1770 | 100% |  |
| CON-LEG101-PR-2110 |  | Staging Time for UPVC Pipes | 10d | 2026-02-01 A | 2026-04-02 A | CON-LEG101-PR-1780 | 100% |  |
|  | 6 | **Inlet Manholes** |  | 2025-12-17 | 2026-04-04 |  |  |  |
| CON-LEG101-PR-1820 |  | PO for Inlet Manholes for Storm network | 5d | 2025-12-17 A | 2025-12-17 A | CON-LEG101-SB-3330 | 100% |  |
| CON-LEG101-PR-1830 |  | Material Fabrication for Inlet Manholes for Storm network | 70d | 2025-12-18 A | 2026-01-28 A | CON-LEG101-PR-1820 | 100% |  |
| CON-LEG101-PR-1840 |  | Material Delivery for Inlet Manholes for Storm network | 15d | 2025-12-28 A | 2026-04-02 A | CON-LEG101-PR-1830 | 100% |  |
| CON-LEG101-PR-1980 |  | Staging Time for Inlet Manholes for Storm network | 10d | 2025-12-30 A | 2026-04-04 A | CON-LEG101-PR-1840 | 100% |  |
|  | 7 | **Concrete chambers** |  | 2025-12-23 | 2026-04-09 |  |  |  |
| CON-LEG101-PR-1850 |  | PO for Concrete chambers | 3d | 2025-12-23 A | 2025-12-23 A | CON-LEG101-PR-1820, CON-LEG101-SB-1630 | 100% |  |
| CON-LEG101-PR-1860 |  | Material Fabrication for Concrete chambers | 75d | 2025-12-27 A | 2026-04-02 A | CON-LEG101-PR-1830 SS+15d, CON-LEG101-PR-1850 | 100% |  |
| CON-LEG101-PR-1870 |  | Material Delivery for Concrete chambers | 20d | 2026-01-31 A | 2026-04-08 A | CON-LEG101-PR-1860 | 100% |  |
| CON-LEG101-PR-1990 |  | Staging Time for Concrete chambers | 20d | 2026-02-01 A | 2026-04-09 A | CON-LEG101-PR-1870 | 100% |  |
|  | 2 | **Public Water Utility Distribution** |  | 2026-01-01 | 2026-04-04 |  |  |  |
|  | 2 | **HDPE Pipe (PN 16)** |  | 2026-01-01 | 2026-04-04 |  |  |  |
| CON-LEG101-PR-1640 |  | PO for HDPE Pipe (PN 16) for Ptable Water | 3d | 2026-01-01 A | 2026-01-01 A | CON-LEG101-SB-1390 | 100% |  |
| CON-LEG101-PR-1650 |  | Material Fabrication for HDPE Pipe (PN 16) for Ptable Water | 75d | 2026-01-03 A | 2026-03-25 A | CON-LEG101-PR-1640 | 100% |  |
| CON-LEG101-PR-1660 |  | Material Delivery for HDPE Pipe (PN 16) for Ptable Water | 15d | 2026-01-04 A | 2026-04-02 A | CON-LEG101-PR-1650 | 100% |  |
| CON-LEG101-PR-4010 |  | Staging Time for HDPE Pipe (PN 16) for Ptable Water | 10d | 2026-01-05 A | 2026-04-04 A | CON-LEG101-PR-1660 | 100% |  |

| ID | WBS | Task | Duration | Start | Finish | Predecessors | Complete | Total float |
| --- | --- | --- | --- | --- | --- | --- | --- | --- |
|  | 1 | **Valves** |  | 2026-01-28 | 2026-03-29 |  |  |  |
| CON-LEG101-PR-1330 |  | PO for Valves for Ptable Water | 5d | 2026-01-28 A | 2026-01-28 A | CON-LEG101-SB-2030 | 100% |  |
| CON-LEG101-PR-1340 |  | Material Fabrication for Valves for Ptable Water | 90d | 2026-01-29 A | 2026-02-02 A | CON-LEG101-PR-1330, CON-LEG101-PR-1860 SS | 100% |  |
| CON-LEG101-PR-1350 |  | Material Delivery for Valves for Ptable Water | 15d | 2026-02-03 A | 2026-03-28 A | CON-LEG101-PR-1970, CON-LEG101-PR-1340 | 100% |  |
| CON-LEG101-PR-1960 |  | Staging Time for Valves for Ptable Water | 10d | 2026-02-04 A | 2026-03-29 A | CON-LEG101-PR-1350 | 100% |  |
|  | 10 | **Fence & Gates** |  | 2025-12-27 | 2027-02-17 |  |  |  |
|  | 1 | **Metal Fence** |  | 2025-12-27 | 2026-07-30 |  |  |  |
| CON-LEG101-PR-2000 |  | PO for Metal Fence | 5d | 2025-12-27 A | 2025-12-27 A | CON-LEG101-SB-2310 | 100% |  |
| CON-LEG101-PR-2010 |  | Material Fabrication for Metal Fence | 75d | 2025-12-28 A | 2026-06-08 A | CON-LEG101-PR-2000 | 100% |  |
| CON-LEG101-PR-2020 |  | Material Delivery for Metal Fence | 15d | 2026-03-10 A | 2026-07-28 A | CON-LEG101-PR-2010 | 100% |  |
| CON-LEG101-PR-2080 |  | Staging Time for Metal Fence | 10d | 2026-03-11 A | 2026-07-30 A | CON-LEG101-PR-2020 | 100% |  |
|  | 2 | **Gates** |  | 2025-12-27 | 2027-02-17 |  |  |  |
| CON-LEG101-PR-2030 |  | PO for Gates | 5d | 2025-12-27 A | 2025-12-27 A | CON-LEG101-SB-2330 | 100% |  |
| CON-LEG101-PR-2040 |  | Material Fabrication for Gates | 70d | 2025-12-28 A | 2027-01-14 | CON-LEG101-PR-2010, CON-LEG101-PR-2030, CON-LEG101-PR-2020 | 20% | 2.5d |
| CON-LEG101-PR-2050 |  | Material Delivery for Gates | 15d | 2027-01-16 | 2027-02-01 | CON-LEG101-PR-2040 |  | 2.5d |
| CON-LEG101-PR-2090 |  | Staging Time for Gates | 10d | 2027-02-02 | 2027-02-17 | CON-LEG101-PR-2050, CON-LEG101-PR-1510 |  | 2.5d |
|  | 3 | **Paint On Cement Plaster** |  | 2026-01-13 | 2026-04-16 |  |  |  |
| CON-LEG101-PR-2610 |  | PO for Paint On Cement Plaster | 5d | 2026-01-13 A | 2026-01-13 A | CON-LEG101-SB-3910, CON-LEG101-PR-2030 | 100% |  |
| CON-LEG101-PR-2620 |  | Material Fabrication for Paint On Cement Plaster | 30d | 2026-04-09 A | 2026-04-12 A | CON-LEG101-PR-2020 SS, CON-LEG101-PR-2610 | 100% |  |
| CON-LEG101-PR-2630 |  | Material Delivery for Paint On Cement Plaster | 10d | 2026-04-15 A | 2026-04-15 A | CON-LEG101-PR-2620 | 100% |  |
| CON-LEG101-PR-2940 |  | Staging Time for Paint On Cement Plaster | 9d | 2026-04-16 A | 2026-04-16 A | CON-LEG101-PR-2630 | 100% |  |
|  | 7 | **Telecommunications** |  | 2026-02-08 | 2026-04-26 |  |  |  |
|  | 2 | **Pipe for the Duct** |  | 2026-02-15 | 2026-03-30 |  |  |  |
| CON-LEG101-PR-3160 |  | PO for Pipe for Duct | 5d | 2026-02-15 A | 2026-02-15 A | CON-LEG101-SB-3350 | 100% |  |
| CON-LEG101-PR-3170 |  | Material Fabrication for Pipe for Duct | 55d | 2026-02-17 A | 2026-03-05 A | CON-LEG101-PR-1100, CON-LEG101-PR-3160 | 100% |  |
| CON-LEG101-PR-3180 |  | Material Delivery for Pipe for Duct | 15d | 2026-02-21 A | 2026-03-30 A | CON-LEG101-PR-3170 | 100% |  |
| CON-LEG101-PR-4020 |  | Staging Time for Pipe for Duct | 15d | 2026-02-22 A | 2026-03-30 A | CON-LEG101-PR-3180 | 100% |  |
|  | 1 | **Low Voltage Cables** |  | 2026-02-08 | 2026-04-16 |  |  |  |
| CON-LEG101-PR-3190 |  | PO for Low Voltage Cables | 5d | 2026-02-08 A | 2026-02-08 A | CON-LEG101-SB-3390 | 100% |  |
| CON-LEG101-PR-3210 |  | Material Fabrication for Low Voltage Cables | 55d | 2026-02-10 A | 2026-04-09 A | CON-LEG101-PR-3170 SS, CON-LEG101-PR-3190 | 100% |  |
| CON-LEG101-PR-3230 |  | Material Delivery for Low Voltage Cables | 20d | 2026-03-14 A | 2026-04-15 A | CON-LEG101-PR-3210, CON-LEG101-PR-3180, CON-LEG101-PR-4020 | 100% |  |
| CON-LEG101-PR-3250 |  | Staging Time for Low Voltage Cables | 20d | 2026-03-15 A | 2026-04-16 A | CON-LEG101-PR-3230 | 100% |  |
|  | 4 | **Manhole** |  | 2026-02-18 | 2026-04-26 |  |  |  |
| CON-LEG101-PR-3200 |  | PO for Manhole | 5d | 2026-02-18 A | 2026-02-19 A | CON-LEG101-SB-3370 SS | 100% |  |
| CON-LEG101-PR-3220 |  | Material Fabrication for Manhole | 75d | 2026-02-21 A | 2026-04-20 A | CON-LEG101-PR-3210 SS, CON-LEG101-PR-3200 | 100% |  |
| CON-LEG101-PR-3240 |  | Material Delivery for Manhole | 15d | 2026-03-15 A | 2026-04-25 A | CON-LEG101-PR-3220, CON-LEG101-PR-3230 | 100% |  |
| CON-LEG101-PR-3260 |  | Staging Time for Manhole | 12d | 2026-03-16 A | 2026-04-26 A | CON-LEG101-PR-3240 | 100% |  |
|  | 9 | **Road Works - Civil** |  | 2026-04-07 | 2026-07-04 |  |  |  |
|  | 10 | **Traffic Signs** |  | 2026-04-07 | 2026-07-04 |  |  |  |
| CON-LEG101-PR-1610 |  | PO for Traffic Signs | 5d | 2026-04-07 A | 2026-04-08 A | CON-LEG101-SB-1230 | 100% |  |
| CON-LEG101-PR-1620 |  | Material Fabrication for Traffic Signs | 90d | 2026-04-09 A | 2026-07-01 A | CON-LEG101-PR-1610, CON-LEG101-PR-1340 SS | 100% |  |
| CON-LEG101-PR-1630 |  | Material Delivery for Traffic Signs | 15d | 2026-06-13 A | 2026-07-02 A | CON-LEG101-PR-1540, CON-LEG101-PR-1620, CON-LEG101-PR-1570 | 100% |  |
| CON-LEG101-PR-2060 |  | Staging Time for Traffic Signs | 10d | 2026-06-14 A | 2026-07-04 A | CON-LEG101-PR-1630 | 100% |  |
|  | 1 | **Electrical Network** |  | 2026-02-08 | 2027-07-03 |  |  |  |
|  | 11 | **Pipe for the Duct** |  | 2026-02-15 | 2026-03-31 |  |  |  |
| CON-LEG101-PR-1260 |  | PO for Pipe for Duct | 3d | 2026-02-15 A | 2026-02-16 A | CON-LEG101-SB-1270 | 100% |  |
| CON-LEG101-PR-1290 |  | Material Fabrication for Pipe for Duct | 90d | 2026-02-16 A | 2026-03-24 A | CON-LEG101-PR-1260 | 100% |  |
| CON-LEG101-PR-1320 |  | Material Delivery for Pipe for Duct | 15d | 2026-02-25 A | 2026-03-28 A | CON-LEG101-PR-1780, CON-LEG101-PR-2110, CON-LEG101-PR-1290 | 100% |  |
| CON-LEG101-PR-1400 |  | Staging Time for Valves for Pipe for Duct | 10d | 2026-02-26 A | 2026-03-31 A | CON-LEG101-PR-1320, CON-LEG101-PR-1340 | 100% |  |
|  | 12 | **Cable Termination & Joints** |  | 2026-09-02 | 2027-04-13 |  |  |  |
| CON-LEG101-PR-1240 |  | PO for Cable Termination & Joints | 5d | 2026-09-02 A | 2026-11-16 | CON-LEG101-SB-1310 |  | -115.5d |
| CON-LEG101-PR-1270 |  | Material Fabrication for Cable Termination & Joints | 90d | 2026-11-17 | 2027-03-07 | CON-LEG101-PR-1240, CON-LEG101-PR-1620 SS |  | -115.5d |
| CON-LEG101-PR-1300 |  | Material Delivery for Cable Termination & Joints | 15d | 2027-03-08 | 2027-03-24 | CON-LEG101-PR-1320, CON-LEG101-PR-1270, CON-LEG101-PR-1620 |  | -115.5d |
| CON-LEG101-PR-1450 |  | Stagging Time for Cable Termination & Joints | 10d | 2027-04-03 | 2027-04-13 | CON-LEG101-PR-1300, CON-LEG101-PR-1880 |  | -122.5d |
|  | 13 | **Earthing System** |  | 2026-02-08 | 2026-05-10 |  |  |  |
| CON-LEG101-PR-1250 |  | PO for Earthing System | 5d | 2026-02-08 A | 2026-02-09 A | CON-LEG101-SB-1350 | 100% |  |
| CON-LEG101-PR-1280 |  | Material Fabrication for Earthing System | 60d | 2026-02-27 A | 2026-03-05 A | CON-LEG101-PR-1250, CON-LEG101-PR-1290 | 100% |  |
| CON-LEG101-PR-1310 |  | Material Delivery for Earthing System | 15d | 2026-05-02 A | 2026-05-07 A | CON-LEG101-PR-1450, CON-LEG101-PR-1280, CON-LEG101-PR-1400 | 100% |  |
| CON-LEG101-PR-1480 |  | Stagging Time for Earthing System | 10d | 2026-05-09 A | 2026-05-10 A | CON-LEG101-PR-1310, CON-LEG101-PR-1450, CON-LEG101-PR-1510 | 100% |  |
|  | 1 | **Medium Voltage Cable** |  | 2026-09-02 | 2027-04-01 |  |  |  |
| CON-LEG101-PR-1000 |  | PO for Medium Voltage Cable | 5d | 2026-09-02 A | 2026-11-16 | CON-LEG101-SB-1670 |  | -130.5d |
| CON-LEG101-PR-1080 |  | Material Fabrication for Medium Voltage Cable | 60d | 2026-12-07 | 2027-02-18 | CON-LEG101-LR-15010, CON-LEG101-LR-15030, CON-LEG101-PR-1000 |  | -147.5d |
| CON-LEG101-PR-1160 |  | Material Delivery for Medium Voltage Cable | 15d | 2027-02-27 | 2027-03-15 | CON-LEG101-LR-15020, CON-LEG101-PR-1080 |  | -147.5d |
| CON-LEG101-PR-1880 |  | Staging Time for Medium Voltage Cable | 15d | 2027-03-16 | 2027-04-01 | CON-LEG101-PR-1160 |  | -147.5d |
|  | 4 | **Street Lighting Sub-station** |  | 2026-04-05 | 2027-06-03 |  |  |  |
| CON-LEG101-PR-1010 |  | PO for Street Lighting Sub-station | 5d | 2026-04-05 A | 2026-04-05 A | CON-LEG101-SB-1750 | 100% |  |
| CON-LEG101-PR-1090 |  | Material Fabrication for Street Lighting Sub-station | 60d | 2027-02-20 | 2027-05-01 | CON-LEG101-PR-1080, CON-LEG101-PR-1010 |  | -83.5d |
| CON-LEG101-PR-1170 |  | Material Delivery for Street Lighting Sub-station | 15d | 2027-05-02 | 2027-05-23 | CON-LEG101-PR-1480, CON-LEG101-PR-1090 |  | -83.5d |
| CON-LEG101-PR-1890 |  | Staging Time for Street Lighting Sub-station | 10d | 2027-05-24 | 2027-06-03 | CON-LEG101-PR-1170, CON-LEG101-PR-1480 |  | -83.5d |
|  | 5 | **Low Voltage Cables** |  | 2026-02-08 | 2026-04-16 |  |  |  |

| ID | WBS | Task | Duration | Start | Finish | Predecessors | Complete | Total float |
| --- | --- | --- | --- | --- | --- | --- | --- | --- |
| CON-LEG101-PR-1020 |  | PO for Low Voltage Cables | 5d | 2026-02-08 A | 2026-02-09 A | CON-LEG101-SB-1790 | 100% |  |
| CON-LEG101-PR-1100 |  | Material Fabrication for Low Voltage Cables | 60d | 2026-02-11 A | 2026-04-09 A | CON-LEG101-PR-1080, CON-LEG101-PR-1020 | 100% |  |
| CON-LEG101-PR-1180 |  | Material Delivery for Low Voltage Cables | 15d | 2026-03-14 A | 2026-04-15 A | CON-LEG101-PR-1170, CON-LEG101-PR-1100, CON-LEG101-PR-2090 | 100% |  |
| CON-LEG101-PR-1900 |  | Staging Time for Low Voltage Cables | 10d | 2026-03-15 A | 2026-04-16 A | CON-LEG101-PR-1180, CON-LEG101-PR-2470, CON-LEG101-PR-2090, CON-LEG101-PR-1890 | 100% |  |
|  | 2 | **Ring Main Unit** |  | 2026-11-16 | 2027-07-03 |  |  |  |
| CON-LEG101-PR-2480 |  | PO for Ring Main Unit | 5d | 2026-11-16 | 2026-11-22 | CON-LEG101-SB-1710 |  | -39.7d |
| CON-LEG101-PR-2490 |  | Material Fabrication for Ring Main Unit | 70d | 2027-02-03 | 2027-05-01 | CON-LEG101-PR-1090 FF, CON-LEG101-PR-2480 |  | -58.5d |
| CON-LEG101-PR-2500 |  | Material Delivery for Ring Main Unit | 15d | 2027-06-05 | 2027-06-21 | CON-LEG101-PR-1900, CON-LEG101-PR-2490, CON-LEG101-PR-1900 FF, CON-LEG101-PR-1910, CON-LEG101-PR-1920 |  | -83.5d |
| CON-LEG101-PR-2510 |  | Staging Time for Ring Main Unit | 10d | 2027-06-22 | 2027-07-03 | CON-LEG101-PR-2500 |  | -83.5d |
|  | 6 | **Lighting poles** |  | 2026-02-16 | 2026-04-13 |  |  |  |
| CON-LEG101-PR-1030 |  | PO for Lighting poles | 4d | 2026-02-16 A | 2026-02-16 A | CON-LEG101-SB-1830 | 100% |  |
| CON-LEG101-PR-1110 |  | Material Fabrication for Lighting poles | 75d | 2026-02-17 A | 2026-03-31 A | CON-LEG101-PR-1160, CON-LEG101-PR-1030 | 100% |  |
| CON-LEG101-PR-1190 |  | Material Delivery for Lighting poles | 15d | 2026-04-01 A | 2026-04-12 A | CON-LEG101-PR-1110 | 100% |  |
| CON-LEG101-PR-1910 |  | Staging Time for Lighting poles | 12d | 2026-04-02 A | 2026-04-13 A | CON-LEG101-PR-1190 | 100% |  |
|  | 3 | **Lighting panels** |  | 2026-04-05 | 2026-08-12 |  |  |  |
| CON-LEG101-PR-2520 |  | PO for Lighting panels | 6d | 2026-04-05 A | 2026-04-05 A | CON-LEG101-SB-2430 | 100% |  |
| CON-LEG101-PR-2530 |  | Material Fabrication for Lighting panels | 75d | 2026-05-02 A | 2026-08-06 A | CON-LEG101-PR-2490 SS, CON-LEG101-PR-2520 | 100% |  |
| CON-LEG101-PR-2540 |  | Material Delivery for Lighting panels | 15d | 2026-08-08 A | 2026-08-10 A | CON-LEG101-PR-2530 | 100% |  |
| CON-LEG101-PR-2550 |  | Staging Time for Lighting panels | 10d | 2026-08-12 A | 2026-08-12 A | CON-LEG101-PR-2510 FF, CON-LEG101-PR-2540 | 100% |  |
|  | 7 | **Street Lighting Luminaire** |  | 2026-02-16 | 2026-04-13 |  |  |  |
| CON-LEG101-PR-1040 |  | PO for Street Lighting Luminaire | 4d | 2026-02-16 A | 2026-02-16 A | CON-LEG101-SB-1870 | 100% |  |
| CON-LEG101-PR-1120 |  | Material Fabrication for Street Lighting Luminaire | 75d | 2026-02-17 A | 2026-03-31 A | CON-LEG101-PR-1110 SS, CON-LEG101-PR-1040 | 100% |  |
| CON-LEG101-PR-1200 |  | Material Delivery for Street Lighting Luminaire | 15d | 2026-04-01 A | 2026-04-12 A | CON-LEG101-PR-1120 | 100% |  |
| CON-LEG101-PR-1920 |  | Staging Time for Street Lighting Luminaire | 12d | 2026-04-02 A | 2026-04-13 A | CON-LEG101-PR-1200 | 100% |  |
|  | 8 | **System for KWHM** |  | 2026-07-16 | 2026-08-12 |  |  |  |
| CON-LEG101-PR-1050 |  | PO for System for KWHM | 6d | 2026-07-16 A | 2026-07-16 A | CON-LEG101-SB-1910 | 100% |  |
| CON-LEG101-PR-1130 |  | Material Fabrication for System for KWHM | 90d | 2026-07-18 A | 2026-08-06 A | CON-LEG101-PR-2490, CON-LEG101-PR-1050 | 100% |  |
| CON-LEG101-PR-1210 |  | Material Delivery for System for KWHM | 15d | 2026-08-08 A | 2026-08-10 A | CON-LEG101-PR-1130, CON-LEG101-PR-2060 | 100% |  |
| CON-LEG101-PR-1930 |  | Staging Time for System for KWHM | 10d | 2026-08-11 A | 2026-08-12 A | CON-LEG101-PR-1210 | 100% |  |
|  | 9 | **Feeder Piller** |  | 2026-07-16 | 2026-08-12 |  |  |  |
| CON-LEG101-PR-1060 |  | PO for Feeder Piller | 6d | 2026-07-16 A | 2026-07-16 A | CON-LEG101-SB-1950 | 100% |  |
| CON-LEG101-PR-1140 |  | Material Fabrication for Feeder Piller | 75d | 2026-07-18 A | 2026-08-06 A | CON-LEG101-PR-2530 SS, CON-LEG101-PR-1060 | 100% |  |
| CON-LEG101-PR-1220 |  | Material Delivery for Feeder Piller | 15d | 2026-08-08 A | 2026-08-10 A | CON-LEG101-PR-1140 | 100% |  |
| CON-LEG101-PR-1940 |  | Staging Time for Feeder Piller | 15d | 2026-08-11 A | 2026-08-12 A | CON-LEG101-PR-1220 | 100% |  |
|  | 10 | **Street Lighting Panels** |  | 2026-07-16 | 2026-08-12 |  |  |  |
| CON-LEG101-PR-1070 |  | PO for Street Lighting Panels | 6d | 2026-07-16 A | 2026-07-16 A | CON-LEG101-SB-1990 | 100% |  |
| CON-LEG101-PR-1150 |  | Material Fabrication for Street Lighting Panels | 75d | 2026-07-18 A | 2026-08-06 A | CON-LEG101-PR-1140 SS, CON-LEG101-PR-1070 | 100% |  |
| CON-LEG101-PR-1230 |  | Material Delivery for Street Lighting Panels | 15d | 2026-08-08 A | 2026-08-10 A | CON-LEG101-PR-1150 | 100% |  |
| CON-LEG101-PR-1950 |  | Staging Time for Street Lighting Panels | 10d | 2026-08-11 A | 2026-08-12 A | CON-LEG101-PR-1230 | 100% |  |
|  | 8 | **CCTV feeding system and GSM** |  | 2026-03-30 | 2026-06-10 |  |  |  |
|  | 15 | **LED Screen 43" (24/7 operation) with Ethernet decoders** |  | 2026-03-30 | 2026-06-10 |  |  |  |
| CON-LEG101-PR-3270 |  | PO for LED Screen 43" (24/7 operation) with Ethernet decoders | 5d | 2026-03-30 A | 2026-03-30 A | CON-LEG101-SB-3590 SS | 100% |  |
| CON-LEG101-PR-3280 |  | Material Fabrication for LED Screen 43" (24/7 operation) with Ethernet decoders | 60d | 2026-04-04 A | 2026-06-04 A | CON-LEG101-PR-3210, CON-LEG101-PR-3270 | 100% |  |
| CON-LEG101-PR-3290 |  | Material Delivery for LED Screen 43" (24/7 operation) with Ethernet decoders | 15d | 2026-06-10 A | 2026-06-10 A | CON-LEG101-PR-3280, CON-LEG101-PR-2550, CON-LEG101-PR-1940, CON-LEG101-PR-1950 | 100% |  |
| CON-LEG101-PR-3950 |  | Staging Time for LED Screen 43" (24/7 operation) with Ethernet decoders | 10d | 2026-06-10 A | 2026-06-10 A | CON-LEG101-PR-3290 | 100% |  |
|  | 16 | **Network Video Recorder 4k 64 Channel** |  | 2026-03-30 | 2026-06-10 |  |  |  |
| CON-LEG101-PR-3740 |  | PO for Network Video Recorder 4k 64 Channel | 2d | 2026-03-30 A | 2026-03-30 A | CON-LEG101-SB-3610 SS+3d | 100% |  |
| CON-LEG101-PR-3750 |  | Material Fabrication for Network Video Recorder 4k 64 Channel | 65d | 2026-04-04 A | 2026-06-04 A | CON-LEG101-PR-3280, CON-LEG101-PR-3740 | 100% |  |
| CON-LEG101-PR-3760 |  | Material Delivery for Network Video Recorder 4k 64 Channel | 10d | 2026-06-10 A | 2026-06-10 A | CON-LEG101-PR-3750 | 100% |  |
| CON-LEG101-PR-3960 |  | Staging Time for Network Video Recorder 4k 64 Channel | 10d | 2026-06-10 A | 2026-06-10 A | CON-LEG101-PR-3760 | 100% |  |
|  | 17 | **Keypad** |  | 2026-03-30 | 2026-06-10 |  |  |  |
| CON-LEG101-PR-3770 |  | PO for Keypad | 2d | 2026-03-30 A | 2026-03-30 A | CON-LEG101-SB-3650 SS+3d | 100% |  |
| CON-LEG101-PR-3780 |  | Material Fabrication for Keypad | 75d | 2026-04-04 A | 2026-06-04 A | CON-LEG101-PR-3750 SS, CON-LEG101-PR-3770 | 100% |  |
| CON-LEG101-PR-3790 |  | Material Delivery for Keypad | 12d | 2026-06-10 A | 2026-06-10 A | CON-LEG101-PR-3780 | 100% |  |
| CON-LEG101-PR-3970 |  | Staging Time for Keypad | 10d | 2026-06-10 A | 2026-06-10 A | CON-LEG101-PR-3790 | 100% |  |
|  | 1 | **Fiber Optic Patch Panel 12 port** |  | 2026-03-30 | 2026-06-10 |  |  |  |
| CON-LEG101-PR-3300 |  | PO for Fiber Optic Patch Panel 12 port | 5d | 2026-03-30 A | 2026-03-30 A | CON-LEG101-SB-3410 | 100% |  |
| CON-LEG101-PR-3320 |  | Material Fabrication for Fiber Optic Patch Panel 12 port | 75d | 2026-04-04 A | 2026-06-04 A | CON-LEG101-PR-3220 SS, CON-LEG101-PR-3300 | 100% |  |
| CON-LEG101-PR-3340 |  | Material Delivery for Fiber Optic Patch Panel 12 port | 15d | 2026-06-10 A | 2026-06-10 A | CON-LEG101-PR-3320 | 100% |  |
| CON-LEG101-PR-3360 |  | Staging Time for Fiber Optic Patch Panel 12 port | 15d | 2026-06-10 A | 2026-06-10 A | CON-LEG101-PR-3340 | 100% |  |
|  | 4 | **Modular Industrial Switches for main pole** |  | 2026-03-30 | 2026-06-10 |  |  |  |
| CON-LEG101-PR-3310 |  | PO for Modular Industrial Switches for main pole | 5d | 2026-03-30 A | 2026-03-30 A | CON-LEG101-SB-3510 | 100% |  |
| CON-LEG101-PR-3330 |  | Material Fabrication for Modular Industrial Switches for main pole | 75d | 2026-04-04 A | 2026-06-04 A | CON-LEG101-PR-3320 SS, CON-LEG101-PR-3310 | 100% |  |
| CON-LEG101-PR-3350 |  | Material Delivery for Modular Industrial Switches for main pole | 15d | 2026-06-10 A | 2026-06-10 A | CON-LEG101-PR-3360, CON-LEG101-PR-3330, CON-LEG101-PR-3360 FF | 100% |  |
| CON-LEG101-PR-3370 |  | Staging Time for Modular Industrial Switches for main pole | 15d | 2026-06-10 A | 2026-06-10 A | CON-LEG101-PR-3350, CON-LEG101-PR-3870, CON-LEG101-PR-3910 | 100% |  |
|  | 2 | **8POE ports Industrial Switches for remote poles** |  | 2026-03-30 | 2026-05-05 |  |  |  |
| CON-LEG101-PR-3380 |  | PO for 8POE ports Industrial Switches for remote poles | 5d | 2026-03-30 A | 2026-03-30 A | CON-LEG101-SB-3450 SS | 100% |  |
| CON-LEG101-PR-3390 |  | Material Fabrication for 8POE ports Industrial Switches for remote poles | 70d | 2026-04-04 A | 2026-04-30 A | CON-LEG101-PR-3330 SS, CON-LEG101-PR-3380 | 100% |  |
| CON-LEG101-PR-3400 |  | Material Delivery for 8POE ports Industrial Switches for remote poles | 20d | 2026-05-02 A | 2026-05-04 A | CON-LEG101-PR-3390 | 100% |  |
| CON-LEG101-PR-3410 |  | Staging Time for 8POE ports Industrial Switches for remote poles | 20d | 2026-05-05 A | 2026-05-05 A | CON-LEG101-PR-3400 | 100% |  |

| ID | WBS | Task | Duration | Start | Finish | Predecessors | Complete |
| --- | --- | --- | --- | --- | --- | --- | --- |
|  | 3 | **Core Switch** |  | 2026-03-30 | 2026-05-05 |  |  |
| CON-LEG101-PR-3420 |  | PO for Core Switch | 5d | 2026-03-30 A | 2026-03-30 A | CON-LEG101-SB-3430 SS | 100% |
| CON-LEG101-PR-3430 |  | Material Fabrication for Core Switch | 75d | 2026-04-04 A | 2026-04-30 A | CON-LEG101-PR-3390, CON-LEG101-PR-3420 | 100% |
| CON-LEG101-PR-3440 |  | Material Delivery for Core Switch | 15d | 2026-05-02 A | 2026-05-04 A | CON-LEG101-PR-3430, CON-LEG101-PR-3370, CON-LEG101-PR-3410 | 100% |
| CON-LEG101-PR-3450 |  | Staging Time for Core Switch | 10d | 2026-05-05 A | 2026-05-05 A | CON-LEG101-PR-3440 | 100% |
|  | 5 | **Access Switch 48 port** |  | 2026-03-30 | 2026-05-05 |  |  |
| CON-LEG101-PR-3460 |  | PO for Access Switch 48 port | 5d | 2026-03-30 A | 2026-03-30 A | CON-LEG101-SB-3470 SS | 100% |
| CON-LEG101-PR-3470 |  | Material Fabrication for Access Switch 48 port | 75d | 2026-04-04 A | 2026-04-30 A | CON-LEG101-PR-3430 SS+7d, CON-LEG101-PR-3460 | 100% |
| CON-LEG101-PR-3480 |  | Material Delivery for Access Switch 48 port | 15d | 2026-05-02 A | 2026-05-04 A | CON-LEG101-PR-3470 | 100% |
| CON-LEG101-PR-3490 |  | Staging Time for Access Switch 48 port | 7d | 2026-05-05 A | 2026-05-05 A | CON-LEG101-PR-3480, CON-LEG101-PR-3450 SS | 100% |
|  | 6 | **Server** |  | 2026-03-30 | 2026-05-05 |  |  |
| CON-LEG101-PR-3500 |  | PO for Server | 5d | 2026-03-30 A | 2026-03-30 A | CON-LEG101-SB-3490 SS | 100% |
| CON-LEG101-PR-3510 |  | Material Fabrication for Server | 77d | 2026-04-04 A | 2026-04-30 A | CON-LEG101-PR-3390 SS, CON-LEG101-PR-3500 | 100% |
| CON-LEG101-PR-3520 |  | Material Delivery for Server | 18d | 2026-05-02 A | 2026-05-04 A | CON-LEG101-PR-3510 | 100% |
| CON-LEG101-PR-3530 |  | Staging Time for Server | 18d | 2026-05-05 A | 2026-05-05 A | CON-LEG101-PR-3520 | 100% |
|  | 7 | **Stand rack 42U- 19"** |  | 2026-03-30 | 2026-05-05 |  |  |
| CON-LEG101-PR-3540 |  | PO for Stand rack 42U- 19" | 6d | 2026-03-30 A | 2026-03-30 A | CON-LEG101-SB-3530 SS | 100% |
| CON-LEG101-PR-3550 |  | Material Fabrication for Stand rack 42U- 19" | 75d | 2026-04-04 A | 2026-04-30 A | CON-LEG101-PR-3510, CON-LEG101-PR-3540 | 100% |
| CON-LEG101-PR-3560 |  | Material Delivery for Stand rack 42U- 19" | 15d | 2026-05-02 A | 2026-05-04 A | CON-LEG101-PR-3550 | 100% |
| CON-LEG101-PR-3570 |  | Staging Time for Stand rack 42U- 19" | 15d | 2026-05-05 A | 2026-05-05 A | CON-LEG101-PR-3560 | 100% |
|  | 8 | **IP Outdoor CCTV POE Camera,5 MP, Metal Housing** |  | 2026-03-30 | 2026-05-05 |  |  |
| CON-LEG101-PR-3580 |  | PO for IP Outdoor CCTV POE Camera,5 MP, Metal Housing | 5d | 2026-03-30 A | 2026-03-30 A | CON-LEG101-SB-3630 SS | 100% |
| CON-LEG101-PR-3590 |  | Material Fabrication for IP Outdoor CCTV POE Camera,5 MP, Metal Housing | 75d | 2026-04-04 A | 2026-04-30 A | CON-LEG101-PR-3510 SS, CON-LEG101-PR-3580 | 100% |
| CON-LEG101-PR-3600 |  | Material Delivery for IP Outdoor CCTV POE Camera,5 MP, Metal Housing | 15d | 2026-05-02 A | 2026-05-04 A | CON-LEG101-PR-3590 | 100% |
| CON-LEG101-PR-3610 |  | Staging Time for IP Outdoor CCTV POE Camera,5 MP, Metal Housing | 15d | 2026-05-05 A | 2026-05-05 A | CON-LEG101-PR-3600 | 100% |
|  | 9 | **Outdoor PTZ with IR, HDTV 1080 and 31x optical, 12x digital** |  | 2026-03-30 | 2026-05-05 |  |  |
| CON-LEG101-PR-3620 |  | PO for Outdoor PTZ with IR, HDTV 1080 and 31x optical, 12x digital | 5d | 2026-03-30 A | 2026-03-30 A | CON-LEG101-SB-3550 SS | 100% |
| CON-LEG101-PR-3630 |  | Material Fabrication for Outdoor PTZ with IR, HDTV 1080 and 31x optical, 12x digital | 90d | 2026-04-04 A | 2026-04-30 A | CON-LEG101-PR-3590 SS, CON-LEG101-PR-3620 | 100% |
| CON-LEG101-PR-3640 |  | Material Delivery for Outdoor PTZ with IR, HDTV 1080 and 31x optical, 12x digital | 15d | 2026-05-02 A | 2026-05-04 A | CON-LEG101-PR-3630, CON-LEG101-PR-3610 | 100% |
| CON-LEG101-PR-3650 |  | Staging Time for Outdoor PTZ with IR, HDTV 1080 and 31x optical, 12x digital | 10d | 2026-05-05 A | 2026-05-05 A | CON-LEG101-PR-3640 | 100% |
|  | 10 | **Security workstation with 1 x 19" LED screen** |  | 2026-03-30 | 2026-05-05 |  |  |
| CON-LEG101-PR-3660 |  | PO for Security workstation with 1 x 19" LED screen | 5d | 2026-03-30 A | 2026-03-30 A | CON-LEG101-SB-3570 SS | 100% |
| CON-LEG101-PR-3670 |  | Material Fabrication for Security workstation with 1 x 19" LED screen | 90d | 2026-04-04 A | 2026-04-30 A | CON-LEG101-PR-3550 SS, CON-LEG101-PR-3660 | 100% |
| CON-LEG101-PR-3680 |  | Material Delivery for Security workstation with 1 x 19" LED screen | 10d | 2026-05-02 A | 2026-05-04 A | CON-LEG101-PR-3670 | 100% |
| CON-LEG101-PR-3690 |  | Staging Time for Security workstation with 1 x 19" LED screen | 10d | 2026-05-05 A | 2026-05-05 A | CON-LEG101-PR-3680 | 100% |
|  | 11 | **Horizontal Power Distribution Unit (min 8 outlets)** |  | 2026-03-30 | 2026-05-05 |  |  |
| CON-LEG101-PR-3700 |  | PO for Horizontal Power Distribution Unit (min 8 outlets) | 5d | 2026-03-30 A | 2026-03-30 A | CON-LEG101-SB-3670 SS | 100% |
| CON-LEG101-PR-3710 |  | Material Fabrication for Horizontal Power Distribution Unit (min 8 outlets) | 90d | 2026-04-04 A | 2026-04-30 A | CON-LEG101-PR-3670 SS, CON-LEG101-PR-3700 | 100% |
| CON-LEG101-PR-3720 |  | Material Delivery for Horizontal Power Distribution Unit (min 8 outlets) | 20d | 2026-05-02 A | 2026-05-04 A | CON-LEG101-PR-3710 | 100% |
| CON-LEG101-PR-3730 |  | Staging Time for Horizontal Power Distribution Unit (min 8 outlets) | 15d | 2026-05-02 A | 2026-05-05 A | CON-LEG101-PR-3720, CON-LEG101-PR-3490, CON-LEG101-PR-3570, CON-LEG101-PR-3690 | 100% |
|  | 12 | **35 Meters mono pole with Double Platform for Access Points** |  | 2026-03-30 | 2026-05-04 |  |  |
| CON-LEG101-PR-3800 |  | PO for 35 Meters mono pole with Double Platform for Access Points | 5d | 2026-03-30 A | 2026-03-30 A | CON-LEG101-SB-3690 SS | 100% |
| CON-LEG101-PR-3810 |  | Material Fabrication for 35 Meters mono pole with Double Platform for Access Points | 90d | 2026-04-04 A | 2026-04-30 A | CON-LEG101-PR-3710 SS, CON-LEG101-PR-3800 | 100% |
| CON-LEG101-PR-3820 |  | Material Delivery for 35 Meters mono pole with Double Platform for Access Points | 20d | 2026-05-02 A | 2026-05-04 A | CON-LEG101-PR-3810 | 100% |
| CON-LEG101-PR-3830 |  | Staging Time for 35 Meters mono pole with Double Platform for Access Points | 20d | 2026-05-02 A | 2026-05-04 A | CON-LEG101-PR-3820 | 100% |
|  | 13 | **25 Meters pole for CCTV Cameras** |  | 2026-03-30 | 2026-05-04 |  |  |
| CON-LEG101-PR-3840 |  | PO for 25 Meters pole for CCTV Cameras | 5d | 2026-03-30 A | 2026-03-30 A | CON-LEG101-SB-3710 SS | 100% |
| CON-LEG101-PR-3850 |  | Material Fabrication for 25 Meters pole for CCTV Cameras | 90d | 2026-04-04 A | 2026-04-30 A | CON-LEG101-PR-3630 SS+10d, CON-LEG101-PR-3840 | 100% |
| CON-LEG101-PR-3860 |  | Material Delivery for 25 Meters pole for CCTV Cameras | 15d | 2026-05-02 A | 2026-05-04 A | CON-LEG101-PR-3850 | 100% |
| CON-LEG101-PR-3870 |  | Staging Time for 25 Meters pole for CCTV Cameras | 15d | 2026-05-02 A | 2026-05-04 A | CON-LEG101-PR-3860 | 100% |
|  | 14 | **Short Range wireless point to point wireless bridge** |  | 2026-03-30 | 2026-05-04 |  |  |
| CON-LEG101-PR-3880 |  | PO for Short Range wireless point to point wireless bridge | 5d | 2026-03-30 A | 2026-03-30 A | CON-LEG101-SB-3730 SS | 100% |
| CON-LEG101-PR-3890 |  | Material Fabrication for Short Range wireless point to point wireless bridge | 90d | 2026-04-04 A | 2026-04-30 A | CON-LEG101-PR-3850 SS, CON-LEG101-PR-3880 | 100% |
| CON-LEG101-PR-3900 |  | Material Delivery for Short Range wireless point to point wireless bridge | 15d | 2026-05-02 A | 2026-05-04 A | CON-LEG101-PR-3890 | 100% |
| CON-LEG101-PR-3910 |  | Staging Time for Short Range wireless point to point wireless bridge | 10d | 2026-05-02 A | 2026-05-04 A | CON-LEG101-PR-3900 | 100% |
|  | 6 | **Landscape Works** |  | 2026-01-01 | 2027-06-21 |  |  |
|  | 1 | **HDPE Pipes** |  | 2026-01-01 | 2026-02-21 |  |  |
| CON-LEG101-PR-3920 |  | PO for HDPE Pipes | 7d | 2026-01-01 A | 2026-01-01 A | CON-LEG101-SB-4040 | 100% |
| CON-LEG101-PR-3930 |  | Material Fabrication for HDPE Pipes | 60d | 2026-01-03 A | 2026-02-09 A | CON-LEG101-PR-1960, CON-LEG101-PR-3920 | 100% |
| CON-LEG101-PR-3940 |  | Material Delivery for HDPE Pipes | 15d | 2026-02-10 A | 2026-02-21 A | CON-LEG101-PR-3930, CON-LEG101-PR-3900, CON-LEG101-PR-3910 FF, CON-LEG101-PR-3910 | 100% |
| CON-LEG101-PR-3980 |  | Staging Time for HDPE Pipes | 10d | 2026-02-12 A | 2026-02-21 A | CON-LEG101-PR-3940 | 100% |
|  | 9 | **Curbs and edging** |  | 2026-02-01 | 2026-07-28 |  |  |
| CON-LEG101-PR-2890 |  | PO for Curbs and edging | 5d | 2026-02-01 A | 2026-02-02 A | CON-LEG101-SB-4190 | 100% |
| CON-LEG101-PR-2950 |  | Material Fabrication for Curbs and edging | 60d | 2026-04-11 A | 2026-07-25 A | CON-LEG101-PR-3930, CON-LEG101-PR-2890 | 100% |
| CON-LEG101-PR-3010 |  | Material Delivery for Curbs and edging | 10d | 2026-07-01 A | 2026-07-26 A | CON-LEG101-PR-2950, CON-LEG101-PR-3980 | 100% |
| CON-LEG101-PR-3070 |  | Staging Time for Curbs and edging | 10d | 2026-07-02 A | 2026-07-28 A | CON-LEG101-PR-3010 | 100% |
|  | 4 | **Electrical Solenoid Valve** |  | 2026-03-25 | 2026-10-13 |  |  |
| CON-LEG101-PR-2840 |  | PO for Electrical Solenoid Valve | 5d | 2026-03-25 A | 2026-03-25 A | CON-LEG101-SB-4050 | 100% |
| CON-LEG101-PR-2900 |  | Material Fabrication for Electrical Solenoid Valve | 60d | 2026-04-11 A | 2026-10-05 A | CON-LEG101-PR-2950 SS+10d, CON-LEG101-PR-2840 | 100% |
| CON-LEG101-PR-2960 |  | Material Delivery for Electrical Solenoid Valve | 10d | 2026-10-06 A | 2026-10-10 A | CON-LEG101-PR-2900 | 100% |

| ID | WBS | Task | Duration | Start | Finish | Predecessors | Complete | Total float |
| --- | --- | --- | --- | --- | --- | --- | --- | --- |
| CON-LEG101-PR-3020 |  | Staging Time for Electrical Solenoid Valve | 10d | 2026-10-11 A | 2026-10-13 A | CON-LEG101-PR-2960, CON-LEG101-PR-3070 | 100% |  |
|  | 5 | **Quick coupler valve** |  | 2026-03-25 | 2026-10-13 |  |  |  |
| CON-LEG101-PR-2850 |  | PO for Quick coupler valve | 5d | 2026-03-25 A | 2026-03-25 A | CON-LEG101-SB-4070 | 100% |  |
| CON-LEG101-PR-2910 |  | Material Fabrication for Quick coupler valve | 60d | 2026-04-11 A | 2026-10-05 A | CON-LEG101-PR-2900 SS, CON-LEG101-PR-2850 | 100% |  |
| CON-LEG101-PR-2970 |  | Material Delivery for Quick coupler valve | 7d | 2026-10-06 A | 2026-10-10 A | CON-LEG101-PR-2910, CON-LEG101-PR-3020 | 100% |  |
| CON-LEG101-PR-3030 |  | Staging Time for Quick coupler valve | 7d | 2026-10-11 A | 2026-10-13 A | CON-LEG101-PR-2970 | 100% |  |
|  | 2 | **Flush valve** |  | 2026-03-25 | 2026-10-13 |  |  |  |
| CON-LEG101-PR-3080 |  | PO for Flush valve | 5d | 2026-03-25 A | 2026-03-25 A | CON-LEG101-SB-4090 | 100% |  |
| CON-LEG101-PR-3090 |  | Material Fabrication for Flush valve | 60d | 2026-04-11 A | 2026-10-05 A | CON-LEG101-PR-2910 SS, CON-LEG101-PR-3080 | 100% |  |
| CON-LEG101-PR-3100 |  | Material Delivery for Flush valve | 10d | 2026-10-06 A | 2026-10-10 A | CON-LEG101-PR-3090, CON-LEG101-PR-3030 | 100% |  |
| CON-LEG101-PR-3110 |  | Staging Time for Flush valve | 10d | 2026-10-11 A | 2026-10-13 A | CON-LEG101-PR-3100 | 100% |  |
|  | 6 | **Irrigation controller** |  | 2026-03-25 | 2026-10-13 |  |  |  |
| CON-LEG101-PR-2860 |  | PO for Irrigation controller | 5d | 2026-03-25 A | 2026-03-25 A | CON-LEG101-SB-4110 | 100% |  |
| CON-LEG101-PR-2920 |  | Material Fabrication for Irrigation controller | 60d | 2026-04-11 A | 2026-10-05 A | CON-LEG101-PR-3090 SS, CON-LEG101-PR-2860 | 100% |  |
| CON-LEG101-PR-2980 |  | Material Delivery for Irrigation controller | 10d | 2026-10-06 A | 2026-10-10 A | CON-LEG101-PR-2920, CON-LEG101-PR-3110 | 100% |  |
| CON-LEG101-PR-3040 |  | Staging Time for Irrigation controller | 10d | 2026-10-11 A | 2026-10-13 A | CON-LEG101-PR-2980 | 100% |  |
|  | 3 | **Decoder for valve** |  | 2026-03-25 | 2026-10-13 |  |  |  |
| CON-LEG101-PR-3120 |  | PO for Decoder for valve | 5d | 2026-03-25 A | 2026-03-25 A | CON-LEG101-SB-4130 | 100% |  |
| CON-LEG101-PR-3130 |  | Material Fabrication for Decoder for valve | 60d | 2026-04-11 A | 2026-10-05 A | CON-LEG101-PR-2920 SS, CON-LEG101-PR-3120 | 100% |  |
| CON-LEG101-PR-3140 |  | Material Delivery for Decoder for valve | 13d | 2026-10-06 A | 2026-10-10 A | CON-LEG101-PR-3130, CON-LEG101-PR-3040 | 100% |  |
| CON-LEG101-PR-3150 |  | Staging Time for Decoder for valve | 10d | 2026-10-11 A | 2026-10-13 A | CON-LEG101-PR-3140 | 100% |  |
|  | 7 | **Decoder Cables** |  | 2026-03-25 | 2026-10-13 |  |  |  |
| CON-LEG101-PR-2870 |  | PO for Decoder Cables | 5d | 2026-03-25 A | 2026-03-25 A | CON-LEG101-SB-4150 | 100% |  |
| CON-LEG101-PR-2930 |  | Material Fabrication for Decoder Cables | 60d | 2026-04-11 A | 2026-10-05 A | CON-LEG101-PR-3130 SS, CON-LEG101-PR-2870 | 100% |  |
| CON-LEG101-PR-2990 |  | Material Delivery for Decoder Cables | 10d | 2026-10-06 A | 2026-10-10 A | CON-LEG101-PR-2930 | 100% |  |
| CON-LEG101-PR-3050 |  | Staging Time for Decoder Cables | 10d | 2026-10-11 A | 2026-10-13 A | CON-LEG101-PR-2990, CON-LEG101-PR-3150 | 100% |  |
|  | 8 | **Shrubs And Ground Cover** |  | 2026-03-25 | 2027-06-21 |  |  |  |
| CON-LEG101-PR-2880 |  | PO for agricultural soil | 5d | 2026-03-25 A | 2026-03-25 A | CON-LEG101-SB-4170 | 100% |  |
| CON-LEG101-PR-3000 |  | Material Delivery for agricultural soil | 90d | 2027-02-20 | 2027-06-09 | CON-LEG101-PR-2880, CON-LEG101-PR-2980, CON-LEG101-PR-3050 |  | 81d |
| CON-LEG101-PR-3060 |  | Staging Time for agricultural soil | 10d | 2027-06-10 | 2027-06-21 | CON-LEG101-PR-3000, CON-LEG101-PR-3830 |  | 81d |
|  | 4 | **Bridge Works** |  | 2026-02-01 | 2027-03-15 |  |  |  |
|  | 3 | **Prestressing Strands** |  | 2026-02-11 | 2026-03-26 |  |  |  |
| CON-LEG101-PR-2120 |  | PO for Prestressing Strands | 7d | 2026-02-11 A | 2026-02-12 A | CON-LEG101-SB-3750 | 100% |  |
| CON-LEG101-PR-2130 |  | Material for Prestressing Strands | 75d | 2026-02-12 A | 2026-03-17 A | CON-LEG101-PR-2120 | 100% |  |
| CON-LEG101-PR-2140 |  | Material Delivery for Prestressing Strands | 15d | 2026-03-10 A | 2026-03-25 A | CON-LEG101-PR-2130 | 100% |  |
| CON-LEG101-PR-2400 |  | Staging Time for Prestressing Strands | 20d | 2026-03-11 A | 2026-03-26 A | CON-LEG101-PR-2140 | 100% |  |
|  | 6 | **Bridge Bearings** |  | 2026-02-11 | 2026-04-21 |  |  |  |
| CON-LEG101-PR-2180 |  | PO for Bridge Bearings | 5d | 2026-02-11 A | 2026-02-12 A | CON-LEG101-SB-3790 | 100% |  |
| CON-LEG101-PR-2190 |  | Material Fabrication for Bridge Bearings | 75d | 2026-02-12 A | 2026-04-02 A | CON-LEG101-PR-2180 | 100% |  |
| CON-LEG101-PR-2200 |  | Material Delivery for Bridge Bearings | 15d | 2026-04-19 A | 2026-04-20 A | CON-LEG101-PR-2190, CON-LEG101-PR-2400 | 100% |  |
| CON-LEG101-PR-2240 |  | Staging Time for Bridge Bearings | 20d | 2026-04-21 A | 2026-04-21 A | CON-LEG101-PR-2200 | 100% |  |
|  | 8 | **Bridge Gully (Scupper) drainage** |  | 2026-03-25 | 2026-06-21 |  |  |  |
| CON-LEG101-PR-2370 |  | PO for Bridge Gully (Scupper) drainage | 5d | 2026-03-25 A | 2026-03-25 A | CON-LEG101-SB-3890 | 100% |  |
| CON-LEG101-PR-2380 |  | Material Fabrication for Bridge Gully (Scupper) drainage | 60d | 2026-03-28 A | 2026-06-18 A | CON-LEG101-PR-2190, CON-LEG101-PR-2370 | 100% |  |
| CON-LEG101-PR-2390 |  | Material Delivery for Bridge Gully (Scupper) drainage | 20d | 2026-06-20 A | 2026-06-20 A | CON-LEG101-PR-2380, CON-LEG101-PR-2240 | 100% |  |
| CON-LEG101-PR-2410 |  | Staging Time for Bridge Gully (Scupper) drainage | 20d | 2026-06-21 A | 2026-06-21 A | CON-LEG101-PR-2390 | 100% |  |
|  | 4 | **New Jersey** |  | 2026-02-01 | 2026-06-21 |  |  |  |
| CON-LEG101-PR-2150 |  | PO for New Jersey | 5d | 2026-02-01 A | 2026-02-01 A | CON-LEG101-SB-3770 | 100% |  |
| CON-LEG101-PR-2160 |  | Material Fabrication for New Jersey | 60d | 2026-03-26 A | 2026-06-18 A | CON-LEG101-PR-2380, CON-LEG101-PR-2150 | 100% |  |
| CON-LEG101-PR-2170 |  | Material Delivery for New Jersey | 10d | 2026-06-20 A | 2026-06-20 A | CON-LEG101-PR-2160, CON-LEG101-PR-2390 FF, CON-LEG101-PR-2410 | 100% |  |
| CON-LEG101-PR-2420 |  | Staging Time for New Jersey | 10d | 2026-06-21 A | 2026-06-21 A | CON-LEG101-PR-2170 | 100% |  |
|  | 7 | **Expansion Joints** |  | 2026-02-11 | 2026-06-21 |  |  |  |
| CON-LEG101-PR-2210 |  | PO for Expansion Joints | 5d | 2026-02-11 A | 2026-02-12 A | CON-LEG101-SB-3810 | 100% |  |
| CON-LEG101-PR-2220 |  | Material Fabrication for Expansion Joints | 60d | 2026-02-12 A | 2026-06-18 A | CON-LEG101-PR-2420, CON-LEG101-PR-2210 | 100% |  |
| CON-LEG101-PR-2230 |  | Material Delivery for Expansion Joints | 10d | 2026-06-20 A | 2026-06-20 A | CON-LEG101-PR-2220, CON-LEG101-PR-2420 | 100% |  |
| CON-LEG101-PR-2250 |  | Staging Time for Expansion Joints | 10d | 2026-06-21 A | 2026-06-21 A | CON-LEG101-PR-2230 | 100% |  |
|  | 1 | **Guard Rail** |  | 2026-03-26 | 2027-03-15 |  |  |  |
| CON-LEG101-PR-2260 |  | PO for Guard Rail | 5d | 2026-03-26 A | 2026-03-26 A | CON-LEG101-SB-3830 | 100% |  |
| CON-LEG101-PR-2270 |  | Material Fabrication for Guard Rail | 75d | 2026-03-28 A | 2026-10-15 A | CON-LEG101-PR-2220 SS, CON-LEG101-PR-2260 | 100% |  |
| CON-LEG101-PR-2280 |  | Material Delivery for Guard Rail | 15d | 2026-10-17 A | 2026-11-15 | CON-LEG101-PR-2270, CON-LEG101-PR-2250 | 75% | 142.25d |
| CON-LEG101-PR-2290 |  | Staging Time for Guard Rail | 20d | 2027-02-20 | 2027-03-15 | CON-LEG101-PR-2280, CON-LEG101-PR-3100 |  | 64d |
|  | 5 | **Logo MODON** |  | 2026-03-26 | 2026-09-30 |  |  |  |
| CON-LEG101-PR-2340 |  | PO for Logo MODON | 5d | 2026-03-26 A | 2026-03-26 A | CON-LEG101-SB-3870 | 100% |  |
| CON-LEG101-PR-2350 |  | Material Fabrication for Logo MODON | 75d | 2026-03-28 A | 2026-09-24 A | CON-LEG101-PR-2280 SS, CON-LEG101-PR-2340 | 100% |  |
| CON-LEG101-PR-2360 |  | Material Delivery for Logo MODON | 19d | 2026-09-26 A | 2026-09-28 A | CON-LEG101-PR-2350, CON-LEG101-PR-2290 | 100% |  |
| CON-LEG101-PR-2430 |  | Staging Time for Logo MODON | 10d | 2026-09-30 A | 2026-09-30 A | CON-LEG101-PR-2360 | 100% |  |
|  | 2 | **GRP Panel** |  | 2026-03-26 | 2026-11-07 |  |  |  |
| CON-LEG101-PR-2300 |  | PO for GRP Panel | 5d | 2026-03-26 A | 2026-03-26 A | CON-LEG101-SB-3850 | 100% |  |
| CON-LEG101-PR-2310 |  | Material Fabrication for GRP Panel | 60d | 2026-03-28 A | 2026-11-04 A | CON-LEG101-PR-2350 SS, CON-LEG101-PR-2300 | 100% |  |
| CON-LEG101-PR-2320 |  | Material Delivery for GRP Panel | 15d | 2026-11-05 A | 2026-11-05 A | CON-LEG101-PR-2310, CON-LEG101-PR-2290 | 100% |  |

| ID | WBS | Task | Duration | Start | Finish | Predecessors | Complete | Total float |
| --- | --- | --- | --- | --- | --- | --- | --- | --- |
| CON-LEG101-PR-2330 |  | Staging Time for GRP Panel | 10d | 2026-11-07 A | 2026-11-07 A | CON-LEG101-PR-2320 | 100% |  |
|  | 11 | **Irrigation Works** |  | 2026-03-25 | 2026-10-11 |  |  |  |
|  | 1 | **Flush valve** |  | 2026-03-25 | 2026-10-11 |  |  |  |
| CON-LEG101-PR-2640 |  | PO for Flush valve | 3d | 2026-03-25 A | 2026-03-25 A | CON-LEG101-SB-3940 | 100% |  |
| CON-LEG101-PR-2680 |  | Material Fabrication for Flush valve | 60d | 2026-04-11 A | 2026-10-05 A | CON-LEG101-PR-2990, CON-LEG101-PR-2640 | 100% |  |
| CON-LEG101-PR-2720 |  | Material Delivery for Flush valve | 20d | 2026-10-06 A | 2026-10-08 A | CON-LEG101-PR-2990, CON-LEG101-PR-2680 | 100% |  |
| CON-LEG101-PR-2760 |  | Staging Time for Flush valve | 10d | 2026-10-10 A | 2026-10-11 A | CON-LEG101-PR-2930, CON-LEG101-PR-2720, CON-LEG101-PR-2070 | 100% |  |
|  | 4 | **16 mm dia (O.D.) linear low density polyethylene tubing** |  | 2026-03-25 | 2026-04-20 |  |  |  |
| CON-LEG101-PR-2650 |  | PO for 16 mm dia (O.D.) linear low density polyethylene tubing | 7d | 2026-03-25 A | 2026-03-25 A | CON-LEG101-SB-3950 | 100% |  |
| CON-LEG101-PR-2690 |  | Material Fabrication for 16 mm dia (O.D.) linear low density polyethylene tubing | 70d | 2026-04-11 A | 2026-04-16 A | CON-LEG101-PR-2680 SS, CON-LEG101-PR-2650 | 100% |  |
| CON-LEG101-PR-2730 |  | Material Delivery for 16 mm dia (O.D.) linear low density polyethylene tubing | 13d | 2026-04-18 A | 2026-04-19 A | CON-LEG101-PR-2690 | 100% |  |
| CON-LEG101-PR-2770 |  | Staging Time for 16 mm dia (O.D.) linear low density polyethylene tubing | 10d | 2026-04-20 A | 2026-04-20 A | CON-LEG101-PR-2680 SS, CON-LEG101-PR-2730 | 100% |  |
|  | 5 | **Irrigation Controller** |  | 2026-03-25 | 2026-04-20 |  |  |  |
| CON-LEG101-PR-2660 |  | PO for Irrigation Controller | 5d | 2026-03-25 A | 2026-03-25 A | CON-LEG101-SB-3970 | 100% |  |
| CON-LEG101-PR-2700 |  | Material Fabrication for Irrigation Controller | 75d | 2026-04-11 A | 2026-04-16 A | CON-LEG101-PR-2690 SS+7d, CON-LEG101-PR-2660 | 100% |  |
| CON-LEG101-PR-2740 |  | Material Delivery for Irrigation Controller | 20d | 2026-04-18 A | 2026-04-19 A | CON-LEG101-PR-2700, CON-LEG101-PR-2770 | 100% |  |
| CON-LEG101-PR-2780 |  | Staging Time for Irrigation Controller | 10d | 2026-04-20 A | 2026-04-20 A | CON-LEG101-PR-2740, CON-LEG101-PR-1530 | 100% |  |
|  | 2 | **Single station decoder** |  | 2026-03-25 | 2026-04-20 |  |  |  |
| CON-LEG101-PR-2800 |  | PO for Single station decoder | 4d | 2026-03-25 A | 2026-03-25 A | CON-LEG101-SB-3990 | 100% |  |
| CON-LEG101-PR-2810 |  | Material Fabrication for Single station decoder | 75d | 2026-04-11 A | 2026-04-16 A | CON-LEG101-PR-2700 SS+6d, CON-LEG101-PR-2800 | 100% |  |
| CON-LEG101-PR-2820 |  | Material Delivery for Single station decoder | 20d | 2026-04-18 A | 2026-04-19 A | CON-LEG101-PR-2810 | 100% |  |
| CON-LEG101-PR-2830 |  | Staging Time for Single station decoder | 10d | 2026-04-20 A | 2026-04-20 A | CON-LEG101-PR-2820 | 100% |  |
|  | 6 | **Decoder cables 12 AWG** |  | 2026-03-25 | 2026-04-20 |  |  |  |
| CON-LEG101-PR-2670 |  | PO for Decoder cables 12 AWG | 3d | 2026-03-25 A | 2026-03-25 A | CON-LEG101-SB-4010 | 100% |  |
| CON-LEG101-PR-2710 |  | Material Fabrication for Decoder cables 12 AWG | 75d | 2026-04-11 A | 2026-04-16 A | CON-LEG101-PR-2810 SS+7d, CON-LEG101-PR-2670 | 100% |  |
| CON-LEG101-PR-2750 |  | Material Delivery for Decoder cables 12 AWG | 20d | 2026-04-18 A | 2026-04-19 A | CON-LEG101-PR-2710 | 100% |  |
| CON-LEG101-PR-2790 |  | Staging Time for Decoder cables 12 AWG | 15d | 2026-04-20 A | 2026-04-20 A | CON-LEG101-PR-2750 | 100% |  |
|  | 1 | **Construction** |  | 2025-11-20 | 2028-04-08 |  |  |  |
|  | 9 | **Site Demolition** |  | 2025-11-20 | 2026-02-02 |  |  |  |
| CON-LEG101-SD-1000 |  | Removal of chain link fence [Demolition Works ] | 21d | 2025-11-20 A | 2025-11-30 A | CON-LEG101-MS-1070, CON-LEG101-MB-1340, CON-LEG101-MB-1270, CON-LEG101-MB-1260, CON-LEG101-MB-1250, CON-LEG101-MB-1160, CON-LEG101-MB-1150, CON-LEG101-MB-1130, CON-LEG101-MB-1120, CON-LEG101-MB-1110, CON-LEG101-MB-1020, CON-LEG101-MB-1000, CON-LEG101-TP-1330, CON-LEG101-PA-1000, CON-LEG101-PA-1010, CON-LEG101-PA-1020, CON-LEG101-PA-1030, CON-LEG101-PA-1040, CON-LEG101-PS-1100, CON-LEG101-PS-1110, CON-LEG101-PS-1120, CON-LEG101-PS-1130, CON-LEG101-PS-1140, CON-LEG101-PS-1150, CON-LEG101-PS-1160, CON-LEG101-PS-1170, CON-LEG101-PS-1090 | 100% |  |
| CON-LEG101-SD-1030 |  | Demolition of existing structures [Demolition Works ] | 21d | 2025-11-20 A | 2025-12-04 A | CON-LEG101-SD-1000, CON-LEG101-MS-1070, CON-LEG101-MB-1340, CON-LEG101-MB-1270, CON-LEG101-MB-1260, CON-LEG101-MB-1250, CON-LEG101-MB-1160, CON-LEG101-MB-1150, CON-LEG101-MB-1130, CON-LEG101-MB-1120, CON-LEG101-MB-1110, CON-LEG101-MB-1020, CON-LEG101-MB-1000, CON-LEG101-TP-1330, CON-LEG101-PA-1000, CON-LEG101-PA-1010, CON-LEG101-PA-1020, CON-LEG101-PA-1030, CON-LEG101-PA-1040, CON-LEG101-PS-1100, CON-LEG101-PS-1110, CON-LEG101-PS-1120, CON-LEG101-PS-1130, CON-LEG101-PS-1140, CON-LEG101-PS-1150, CON-LEG101-PS-1160, CON-LEG101-PS-1170, CON-LEG101-PS-1090 | 100% |  |
| CON-LEG101-SD-1010 |  | Removal of concrete fence [Demolition Works ] | 21d | 2025-11-24 A | 2025-12-03 A | CON-LEG101-SD-1000, CON-LEG101-MS-1070, CON-LEG101-MB-1340, CON-LEG101-MB-1270, CON-LEG101-MB-1260, CON-LEG101-MB-1250, CON-LEG101-MB-1160, CON-LEG101-MB-1150, CON-LEG101-MB-1130, CON-LEG101-MB-1120, CON-LEG101-MB-1110, CON-LEG101-MB-1020, CON-LEG101-MB-1000, CON-LEG101-TP-1330, CON-LEG101-PA-1000, CON-LEG101-PA-1010, CON-LEG101-PA-1020, CON-LEG101-PA-1030, CON-LEG101-PA-1040, CON-LEG101-PS-1100, CON-LEG101-PS-1110, CON-LEG101-PS-1120, CON-LEG101-PS-1130, CON-LEG101-PS-1140, CON-LEG101-PS-1150, CON-LEG101-PS-1160, CON-LEG101-PS-1170, CON-LEG101-PS-1090 | 100% |  |
| CON-LEG101-SD-1020 |  | Removal of Electricity distribution panel [Demolition Works ] | 21d | 2026-02-01 A | 2026-02-02 A | CON-LEG101-SD-1010, CON-LEG101-MS-1070, CON-LEG101-MB-1340, CON-LEG101-MB-1270, CON-LEG101-MB-1260, CON-LEG101-MB-1250, CON-LEG101-MB-1160, CON-LEG101-MB-1150, CON-LEG101-MB-1130, CON-LEG101-MB-1120, CON-LEG101-MB-1110, CON-LEG101-MB-1020, CON-LEG101-MB-1000, CON-LEG101-TP-1330, CON-LEG101-PA-1000, CON-LEG101-PA-1010, CON-LEG101-PA-1020, CON-LEG101-PA-1030, CON-LEG101-PA-1040, CON-LEG101-PS-1100, CON-LEG101-PS-1110, CON-LEG101-PS-1120, CON-LEG101-PS-1130, CON-LEG101-PS-1140, CON-LEG101-PS-1150, CON-LEG101-PS-1160, CON-LEG101-PS-1170, CON-LEG101-PS-1090 | 100% |  |
|  | 1 | **Roads & Meduim Voltage** |  | 2025-12-01 | 2027-07-10 |  |  |  |
|  | 1 | **Local – 01** |  | 2025-12-01 | 2027-06-23 |  |  |  |
|  | 1 | **LOCAL - 01 Segment-01 (From 0+000 to 1+066)** |  | 2025-12-01 | 2027-05-05 |  |  |  |
|  | 7 | **Road Works** |  | 2025-12-01 | 2026-07-16 |  |  |  |
|  | 1 | **Earthworks and Site Grading** |  | 2025-12-01 | 2026-04-20 |  |  |  |
| CON-LEG101-LR-2760 |  | Parcrels Excavation for Roadway [Local – 01 Segment-01] | 20d | 2025-12-01 A | 2026-04-19 A | CON-LEG101-LR-1360, CON-LEG101-EN-1570, CON-LEG101-EN-1580, CON-LEG101-EN-1590, CON-LEG101-EN-1600, CON-LEG101-EN-1610, CON-LEG101-EN-3440 | 100% |  |
| CON-LEG101-LR-4570 |  | Embankments to the parcels for roads [Local – 01 Segment-01] | 21d | 2025-12-06 A | 2025-12-29 A | CON-LEG101-PR-4000, CON-LEG101-LR-4070, CON-LEG101-EN-1570, CON-LEG101-EN-1580, CON-LEG101-EN-1590, CON-LEG101-EN-1600, CON-LEG101-EN-1610, CON-LEG101-EN-3440, CON-LEG101-PR-1080 | 100% |  |
| CON-LEG101-LR-1360 |  | Excavation for Roadway [Local – 01 Segment-01] | 21d | 2025-12-15 A | 2026-04-19 A | CON-LEG101-SD-1000, CON-LEG101-EN-1570, CON-LEG101-EN-1580, CON-LEG101-EN-1590, CON-LEG101-EN-1600, CON-LEG101-EN-1610, CON-LEG101-EN-3440, CON-LEG101-MS-1060 | 100% |  |
| CON-LEG101-LR-4070 |  | Embankments to the roads [Local – 01 Segment-01] | 15d | 2025-12-17 A | 2026-04-20 A | CON-LEG101-PR-4000, CON-LEG101-LR-2760, CON-LEG101-EN-1570, CON-LEG101-EN-1580, CON-LEG101-EN-1590, CON-LEG101-EN-1600, CON-LEG101-EN-1610, CON-LEG101-EN-3440, CON-LEG101-SD-1020 | 100% |  |
|  | 2 | **Asphalt Work** |  | 2025-12-25 | 2026-07-16 |  |  |  |
| CON-LEG101-LR-5580 |  | Subgrade [Local – 01 Segment-01] | 14d | 2025-12-25 A | 2026-04-27 A | CON-LEG101-LR-3500, CON-LEG101-LR-10910, CON-LEG101-PR-4000, CON-LEG101-LR-4570, CON-LEG101-LR-4200, CON-LEG101-LR-3410, CON-LEG101-EN-3440 | 100% |  |
| CON-LEG101-LR-5680 |  | Aggregate base course [Local – 01 Segment-01] | 10d | 2026-04-28 A | 2026-07-14 A | CON-LEG101-LR-10860, CON-LEG101-LR-5580, CON-LEG101-PR-1490, CON-LEG101-EN-3470 | 100% |  |
| CON-LEG101-LR-5780 |  | Prime Coat (MC1) [Local – 01 Segment-01] | 6d | 2026-05-14 A | 2026-07-15 A | CON-LEG101-LR-5680 | 100% |  |
| CON-LEG101-LR-5880 |  | Bituminous Base Course [Local – 01 Segment-01] | 6d | 2026-05-19 A | 2026-07-16 A | CON-LEG101-LR-5780, CON-LEG101-PR-1510 | 100% |  |
|  | 8 | **Electrical Works** |  | 2026-04-11 | 2027-05-05 |  |  |  |
| CON-LEG101-LR-15000 |  | Approval of Subcontractor / Supplier / Consultant for Medium Voltage from SEC | 10d | 2026-11-11 | 2026-11-22 | CON-LEG101-SB-1670 SS |  | -147.5d |
| CON-LEG101-LR-15010 |  | Approval Materials of Medium Voltage from SEC | 10d | 2026-11-23 | 2026-12-03 | CON-LEG101-LR-15000 |  | -147.5d |
| CON-LEG101-LR-15030 |  | PO for Medium Voltage | 2d | 2026-12-05 | 2026-12-06 | CON-LEG101-LR-15010 |  | -147.5d |
| CON-LEG101-LR-15020 |  | Testing Materials of Medium Voltage from SEC | 5d | 2027-02-20 | 2027-02-25 | CON-LEG101-LR-15010, CON-LEG101-PR-1080 |  | -147.5d |
|  | 2 | **Medium Voltage** |  | 2026-04-11 | 2027-05-05 |  |  |  |
| CON-LEG101-LR-6970 |  | Installation of Medium Voltage Cables Duct Banks [Local – 01 Segment-01] | 10d | 2026-04-11 A | 2026-04-30 A | CON-LEG101-PR-1400, CON-LEG101-LR-6880, CON-LEG101-PR-1320 | 100% |  |
| CON-LEG101-LR-6880 |  | Excavation for Medium Voltage trench [Local – 01 Segment-01] | 7d | 2027-04-03 | 2027-04-10 | CON-LEG101-PR-1880, CON-LEG101-EN-1660, CON-LEG101-EN-3440, CON-LEG101-LR-4570 |  | -147.5d |
| CON-LEG101-LR-7060 |  | Installation of Medium Voltage Cables [Local – 01 Segment-01] | 7d | 2027-04-11 | 2027-04-18 | CON-LEG101-LR-6970 |  | -68.5d |
| CON-LEG101-LR-7150 |  | Installation of Straight joints cables [Local – 01 Segment-01] | 2d | 2027-04-19 | 2027-04-20 | CON-LEG101-PR-1450, CON-LEG101-LR-7060, CON-LEG101-PR-1300 |  | -68.5d |
| CON-LEG101-LR-7240 |  | Installation of Cable Termination for 13.8 kv 3Cx 500 mm², Al /XLPE/LLDPE [Local – 01 Segment-01] | 3d | 2027-04-21 | 2027-04-24 | CON-LEG101-PR-1450, CON-LEG101-LR-7150, CON-LEG101-PR-1300, CON-LEG101-LR-5580 |  | -68.5d |
| CON-LEG101-LR-7330 |  | Installation of Medium Voltage Switchgears [Local – 01 Segment-01] | 7d | 2027-04-25 | 2027-05-02 | CON-LEG101-PR-1450, CON-LEG101-LR-7240, CON-LEG101-PR-1300 |  | -68.5d |
| CON-LEG101-LR-7680 |  | Installation of Cable Termination [Local – 01 Segment-01] | 3d | 2027-05-03 | 2027-05-05 | CON-LEG101-LR-7330, CON-LEG101-PR-1450, CON-LEG101-PR-1300 |  | -68.5d |
|  | 2 | **LOCAL - 01 Segment-02 (From 1+066 to 2+133)** |  | 2025-12-06 | 2027-05-27 |  |  |  |
|  | 7 | **Road Works** |  | 2025-12-06 | 2026-06-14 |  |  |  |
|  | 1 | **Earthworks and Site Grading** |  | 2025-12-06 | 2026-04-15 |  |  |  |
| CON-LEG101-LR-2770 |  | Parcrels Excavation for Roadway [Local – 01 Segment-02] | 18d | 2025-12-06 A | 2025-12-11 A | CON-LEG101-LR-1450, CON-LEG101-EN-1570, CON-LEG101-EN-1580, CON-LEG101-EN-1590, CON-LEG101-EN-1600, CON-LEG101-EN-1610, CON-LEG101-EN-3440 | 100% |  |
| CON-LEG101-LR-4640 |  | Embankments to the parcels for roads [Local – 01 Segment-02] | 20d | 2025-12-13 A | 2026-04-15 A | CON-LEG101-PR-4000, CON-LEG101-LR-4170, CON-LEG101-EN-1570, CON-LEG101-EN-1580, CON-LEG101-EN-1590, CON-LEG101-EN-1600, CON-LEG101-EN-1610, CON-LEG101-EN-3440 | 100% |  |
| CON-LEG101-LR-1450 |  | Excavation for Roadway [Local – 01 Segment-02] | 21d | 2025-12-16 A | 2026-01-19 A | CON-LEG101-SD-1000, CON-LEG101-LR-1360 SS, CON-LEG101-EN-1570, CON-LEG101-EN-1580, CON-LEG101-EN-1590, CON-LEG101-EN-1600, CON-LEG101-EN-1610, CON-LEG101-EN-3440 | 100% |  |
| CON-LEG101-LR-4170 |  | Embankments to the roads [Local – 01 Segment-02] | 19d | 2025-12-17 A | 2026-01-20 A | CON-LEG101-PR-4000, CON-LEG101-LR-2770, CON-LEG101-EN-1570, CON-LEG101-EN-1580, CON-LEG101-EN-1590, CON-LEG101-EN-1600, CON-LEG101-EN-1610, CON-LEG101-EN-3440 | 100% |  |
|  | 2 | **Asphalt Work** |  | 2025-12-29 | 2026-06-14 |  |  |  |
| CON-LEG101-LR-5590 |  | Subgrade [Local – 01 Segment-02] | 14d | 2025-12-29 A | 2026-05-02 A | CON-LEG101-LR-3510, CON-LEG101-LR-10960, CON-LEG101-PR-4000, CON-LEG101-LR-1450, CON-LEG101-LR-2770, CON-LEG101-LR-4170, CON-LEG101-LR-4640, CON-LEG101-LR-4210, CON-LEG101-LR-3420, CON-LEG101-EN-3440 | 100% |  |
| CON-LEG101-LR-5690 |  | Aggregate base course [Local – 01 Segment-02] | 14d | 2026-05-03 A | 2026-05-21 A | CON-LEG101-LR-11020, CON-LEG101-LR-5590, CON-LEG101-PR-1490, CON-LEG101-EN-3470 | 100% |  |

| ID | WBS | Task | Duration | Start | Finish | Predecessors | Complete | Total float |
| --- | --- | --- | --- | --- | --- | --- | --- | --- |
| CON-LEG101-LR-5790 |  | Prime Coat (MC1) [Local – 01 Segment-02] | 6d | 2026-05-18 A | 2026-06-06 A | CON-LEG101-LR-5690, CON-LEG101-LR-7680, CON-LEG101-LR-5880 | 100% |  |
| CON-LEG101-LR-5890 |  | Bituminous Base Course [Local – 01 Segment-02] | 6d | 2026-05-20 A | 2026-06-14 A | CON-LEG101-LR-5790, CON-LEG101-PR-1510 | 100% |  |
|  | 8 | **Electrical Works** |  | 2026-04-14 | 2027-05-27 |  |  |  |
|  | 2 | **Medium Voltage** |  | 2026-04-14 | 2027-05-27 |  |  |  |
| CON-LEG101-LR-6980 |  | Installation of Medium Voltage Cables Duct Banks [Local – 01 Segment-02] | 10d | 2026-04-14 A | 2026-04-30 A | CON-LEG101-PR-1400, CON-LEG101-LR-6890, CON-LEG101-PR-1320 | 100% |  |
| CON-LEG101-LR-6890 |  | Excavation for Medium Voltage trench [Local – 01 Segment-02] | 7d | 2027-04-11 | 2027-04-18 | CON-LEG101-LR-3420, CON-LEG101-LR-4210, CON-LEG101-PR-1880, CON-LEG101-LR-6880, CON-LEG101-EN-1660, CON-LEG101-EN-3440 |  | -147.5d |
| CON-LEG101-LR-7070 |  | Installation of Medium Voltage Cables [Local – 01 Segment-02] | 7d | 2027-04-19 | 2027-04-26 | CON-LEG101-LR-6980, CON-LEG101-LR-5590 |  | -65.5d |
| CON-LEG101-LR-7160 |  | Installation of Straight joints cables [Local – 01 Segment-02] | 5d | 2027-04-27 | 2027-05-02 | CON-LEG101-PR-1450, CON-LEG101-LR-7070, CON-LEG101-PR-1300 |  | -65.5d |
| CON-LEG101-LR-7250 |  | Installation of Cable Termination for 13.8 kv 3Cx 500 mm², Al /XLPE/LLDPE [Local – 01 Segment-02] | 3d | 2027-05-06 | 2027-05-09 | CON-LEG101-PR-1450, CON-LEG101-LR-7160, CON-LEG101-PR-1300, CON-LEG101-LR-7680 |  | -68.5d |
| CON-LEG101-LR-7340 |  | Installation of Medium Voltage Switchgears [Local – 01 Segment-02] | 7d | 2027-05-10 | 2027-05-22 | CON-LEG101-PR-1450, CON-LEG101-LR-7250, CON-LEG101-PR-1300 |  | -68.5d |
| CON-LEG101-LR-7690 |  | Installation of Cable Termination [Local – 01 Segment-02] | 5d | 2027-05-23 | 2027-05-27 | CON-LEG101-LR-7340, CON-LEG101-PR-1450, CON-LEG101-PR-1300 |  | -68.5d |
|  | 3 | **LOCAL - 01 Segment-03 (From 2+133 to 3+200)** |  | 2025-12-28 | 2027-06-23 |  |  |  |
|  | 7 | **Road Works** |  | 2025-12-28 | 2026-09-10 |  |  |  |
|  | 1 | **Earthworks and Site Grading** |  | 2025-12-28 | 2026-09-10 |  |  |  |
| CON-LEG101-LR-2860 |  | Parcrels Excavation for Roadway [Local – 01 Segment-03] | 18d | 2025-12-28 A | 2026-09-10 A | CON-LEG101-LR-1540, CON-LEG101-EN-1570, CON-LEG101-EN-1580, CON-LEG101-EN-1590, CON-LEG101-EN-1600, CON-LEG101-EN-1610, CON-LEG101-EN-3440 | 100% |  |
| CON-LEG101-LR-4710 |  | Embankments to the parcels for roads [Local – 01 Segment-03] | 21d | 2025-12-28 A | 2026-07-08 A | CON-LEG101-LR-4270, CON-LEG101-EN-1570, CON-LEG101-EN-1580, CON-LEG101-EN-1590, CON-LEG101-EN-1600, CON-LEG101-EN-1610, CON-LEG101-EN-3440, CON-LEG101-LR-4570 | 100% |  |
| CON-LEG101-LR-1540 |  | Excavation for Roadway [Local – 01 Segment-03] | 21d | 2026-03-28 A | 2026-07-05 A | CON-LEG101-SD-1000, CON-LEG101-LR-1450, CON-LEG101-EN-1570, CON-LEG101-EN-1580, CON-LEG101-EN-1590, CON-LEG101-EN-1600, CON-LEG101-EN-1610, CON-LEG101-EN-3440, CON-LEG101-LR-2760 | 100% |  |
| CON-LEG101-LR-4270 |  | Embankments to the roads [Local – 01 Segment-03] | 21d | 2026-03-30 A | 2026-07-05 A | CON-LEG101-LR-2860, CON-LEG101-EN-1570, CON-LEG101-EN-1580, CON-LEG101-EN-1590, CON-LEG101-EN-1600, CON-LEG101-EN-1610, CON-LEG101-EN-3440 | 100% |  |
|  | 2 | **Asphalt Work** |  | 2026-06-17 | 2026-07-26 |  |  |  |
| CON-LEG101-LR-5600 |  | Subgrade [Local – 01 Segment-03] | 14d | 2026-06-17 A | 2026-07-13 A | CON-LEG101-LR-3520, CON-LEG101-LR-11060, CON-LEG101-LR-4710, CON-LEG101-LR-2860, CON-LEG101-LR-4270, CON-LEG101-LR-4710 FF, CON-LEG101-LR-4220, CON-LEG101-LR-3430, CON-LEG101-EN-3440 | 100% |  |
| CON-LEG101-LR-5700 |  | Aggregate base course [Local – 01 Segment-03] | 10d | 2026-07-11 A | 2026-07-23 A | CON-LEG101-LR-11120, CON-LEG101-LR-5600, CON-LEG101-PR-1490, CON-LEG101-EN-3470, CON-LEG101-LR-7690 | 100% |  |
| CON-LEG101-LR-5800 |  | Prime Coat (MC1) [Local – 01 Segment-03] | 8d | 2026-07-18 A | 2026-07-25 A | CON-LEG101-LR-5700 | 100% |  |
| CON-LEG101-LR-5900 |  | Bituminous Base Course [Local – 01 Segment-03] | 8d | 2026-07-19 A | 2026-07-26 A | CON-LEG101-LR-5800, CON-LEG101-PR-1510, CON-LEG101-LR-5890 | 100% |  |
|  | 8 | **Electrical Works** |  | 2026-06-20 | 2027-06-23 |  |  |  |
|  | 2 | **Medium Voltage** |  | 2026-06-20 | 2027-06-23 |  |  |  |
| CON-LEG101-LR-6990 |  | Installation of Medium Voltage Cables Duct Banks [Local – 01 Segment-03] | 5d | 2026-06-20 A | 2026-07-14 A | CON-LEG101-PR-1400, CON-LEG101-LR-6900, CON-LEG101-PR-1320 | 100% |  |
| CON-LEG101-LR-6900 |  | Excavation for Medium Voltage trench [Local – 01 Segment-03] | 4d | 2027-05-29 | 2027-06-01 | CON-LEG101-PR-1880, CON-LEG101-LR-4220, CON-LEG101-LR-3430, CON-LEG101-EN-1660, CON-LEG101-EN-3440, CON-LEG101-LR-5700 |  | -68.5d |
| CON-LEG101-LR-7080 |  | Installation of Medium Voltage Cables [Local – 01 Segment-03] | 7d | 2027-06-02 | 2027-06-09 | CON-LEG101-LR-6990 |  | -68.5d |
| CON-LEG101-LR-7170 |  | Installation of Straight joints cables [Local – 01 Segment-03] | 2d | 2027-06-10 | 2027-06-12 | CON-LEG101-PR-1450, CON-LEG101-LR-7080, CON-LEG101-PR-1300 |  | -68.5d |
| CON-LEG101-LR-7260 |  | Installation of Cable Termination for 13.8 kv 3Cx 500 mm², Al /XLPE/LLDPE [Local – 01 Segment-03] | 3d | 2027-06-13 | 2027-06-15 | CON-LEG101-PR-1450, CON-LEG101-LR-7170, CON-LEG101-PR-1300 |  | -68.5d |
| CON-LEG101-LR-7350 |  | Installation of Medium Voltage Switchgears [Local – 01 Segment-03] | 4d | 2027-06-16 | 2027-06-20 | CON-LEG101-PR-1450, CON-LEG101-LR-7260, CON-LEG101-PR-1300 |  | -68.5d |
| CON-LEG101-LR-7700 |  | Installation of Cable Termination [Local – 01 Segment-03] | 3d | 2027-06-21 | 2027-06-23 | CON-LEG101-LR-7350, CON-LEG101-PR-1450, CON-LEG101-PR-1300 |  | -68.5d |
|  | 4 | **Local – 02** |  | 2025-12-08 | 2027-06-12 |  |  |  |
|  | 7 | **Road Works** |  | 2025-12-08 | 2026-06-21 |  |  |  |
|  | 1 | **Earthworks and Site Grading** |  | 2025-12-08 | 2026-06-18 |  |  |  |
| CON-LEG101-LR-2950 |  | Parcrels Excavation for Roadway [Local – 02 ] | 18d | 2025-12-08 A | 2026-01-05 A | CON-LEG101-LR-1630, CON-LEG101-EN-1570, CON-LEG101-EN-1580, CON-LEG101-EN-1590, CON-LEG101-EN-1600, CON-LEG101-EN-1610, CON-LEG101-EN-3440, CON-LEG101-LR-2860, CON-LEG101-LR-4710 | 100% |  |
| CON-LEG101-LR-4780 |  | Embankments to the parcels for roads [Local – 02 ] | 14d | 2025-12-13 A | 2026-06-18 A | CON-LEG101-LR-4310, CON-LEG101-EN-1570, CON-LEG101-EN-1580, CON-LEG101-EN-1590, CON-LEG101-EN-1600, CON-LEG101-EN-1610, CON-LEG101-EN-3440, CON-LEG101-LR-4710 | 100% |  |
| CON-LEG101-LR-1630 |  | Excavation for Roadway [Local – 02 ] | 21d | 2025-12-24 A | 2025-12-29 A | CON-LEG101-SD-1000, CON-LEG101-LR-1360, CON-LEG101-EN-1570, CON-LEG101-EN-1580, CON-LEG101-EN-1590, CON-LEG101-EN-1600, CON-LEG101-EN-1610, CON-LEG101-EN-3440, CON-LEG101-LR-1540 SS+5d | 100% |  |
| CON-LEG101-LR-4310 |  | Embankments to the roads [Local – 02 ] | 21d | 2025-12-29 A | 2026-01-03 A | CON-LEG101-LR-2950, CON-LEG101-EN-1570, CON-LEG101-EN-1580, CON-LEG101-EN-1590, CON-LEG101-EN-1600, CON-LEG101-EN-1610, CON-LEG101-EN-3440 | 100% |  |
|  | 2 | **Asphalt Work** |  | 2026-01-12 | 2026-06-21 |  |  |  |
| CON-LEG101-LR-5610 |  | Subgrade [Local – 02 ] | 7d | 2026-01-12 A | 2026-01-25 A | CON-LEG101-LR-3530, CON-LEG101-LR-11170, CON-LEG101-LR-4780, CON-LEG101-LR-1630, CON-LEG101-LR-2950, CON-LEG101-LR-4310, CON-LEG101-LR-4780 FF, CON-LEG101-LR-4230, CON-LEG101-LR-3440, CON-LEG101-EN-3440 | 100% |  |
| CON-LEG101-LR-5710 |  | Aggregate base course [Local – 02 ] | 9d | 2026-06-09 A | 2026-06-18 A | CON-LEG101-LR-11220, CON-LEG101-LR-5610, CON-LEG101-PR-1490, CON-LEG101-EN-3470 | 100% |  |
| CON-LEG101-LR-5810 |  | Prime Coat (MC1) [Local – 02 ] | 2d | 2026-06-11 A | 2026-06-20 A | CON-LEG101-LR-5710, CON-LEG101-LR-5900 | 100% |  |
| CON-LEG101-LR-5910 |  | Bituminous Base Course [Local – 02 ] | 4d | 2026-06-15 A | 2026-06-21 A | CON-LEG101-LR-5810, CON-LEG101-PR-1510 | 100% |  |
|  | 8 | **Electrical Works** |  | 2026-05-31 | 2027-06-12 |  |  |  |
|  | 2 | **Medium Voltage** |  | 2026-05-31 | 2027-06-12 |  |  |  |
| CON-LEG101-LR-7000 |  | Installation of Medium Voltage Cables Duct Banks [Local – 02 ] | 8d | 2026-05-31 A | 2026-06-09 A | CON-LEG101-PR-1400, CON-LEG101-LR-6910, CON-LEG101-PR-1320 | 100% |  |
| CON-LEG101-LR-6910 |  | Excavation for Medium Voltage trench [Local – 02 ] | 8d | 2027-04-19 | 2027-04-27 | CON-LEG101-PR-1880, CON-LEG101-LR-6890, CON-LEG101-LR-3440, CON-LEG101-LR-4230, CON-LEG101-EN-1660, CON-LEG101-EN-3440 |  | -147.5d |
| CON-LEG101-LR-7090 |  | Installation of Medium Voltage Cables [Local – 02 ] | 13d | 2027-04-28 | 2027-05-12 | CON-LEG101-LR-7000 |  | -147.5d |
| CON-LEG101-LR-7180 |  | Installation of Straight joints cables [Local – 02 ] | 6d | 2027-05-13 | 2027-05-24 | CON-LEG101-PR-1450, CON-LEG101-LR-7090, CON-LEG101-PR-1300 |  | -147.5d |
| CON-LEG101-LR-7270 |  | Installation of Cable Termination for 13.8 kv 3Cx 500 mm², Al /XLPE/LLDPE [Local – 02 ] | 8d | 2027-05-25 | 2027-06-02 | CON-LEG101-PR-1450, CON-LEG101-LR-7180, CON-LEG101-PR-1300 |  | -147.5d |
| CON-LEG101-LR-7360 |  | Installation of Medium Voltage Switchgears [Local – 02 ] | 5d | 2027-06-03 | 2027-06-08 | CON-LEG101-PR-1450, CON-LEG101-LR-7270, CON-LEG101-PR-1300 |  | -147.5d |
| CON-LEG101-LR-7710 |  | Installation of Cable Termination [Local – 02 ] | 3d | 2027-06-09 | 2027-06-12 | CON-LEG101-LR-7360, CON-LEG101-PR-1450, CON-LEG101-PR-1300 |  | -147.5d |
|  | 2 | **Local – 03** |  | 2025-12-08 | 2027-07-05 |  |  |  |
|  | 7 | **Road Works** |  | 2025-12-08 | 2026-09-10 |  |  |  |
|  | 1 | **Earthworks and Site Grading** |  | 2025-12-08 | 2026-09-10 |  |  |  |
| CON-LEG101-LR-3040 |  | Parcrels Excavation for Roadway [Local – 03 ] | 14d | 2025-12-08 A | 2026-03-30 A | CON-LEG101-LR-1740, CON-LEG101-EN-1570, CON-LEG101-EN-1580, CON-LEG101-EN-1590, CON-LEG101-EN-1600, CON-LEG101-EN-1610, CON-LEG101-EN-3440, CON-LEG101-LR-2950 | 100% |  |
| CON-LEG101-LR-4820 |  | Embankments to the parcels for roads [Local – 03 ] | 16d | 2025-12-13 A | 2026-09-10 A | CON-LEG101-LR-4360, CON-LEG101-EN-1570, CON-LEG101-EN-1580, CON-LEG101-EN-1590, CON-LEG101-EN-1600, CON-LEG101-EN-1610, CON-LEG101-EN-3440 | 100% |  |
| CON-LEG101-LR-1740 |  | Excavation for Roadway [Local – 03 ] | 14d | 2026-01-05 A | 2026-01-08 A | CON-LEG101-LR-1630, CON-LEG101-SD-1000, CON-LEG101-EN-1570, CON-LEG101-EN-1580, CON-LEG101-EN-1590, CON-LEG101-EN-1600, CON-LEG101-EN-1610, CON-LEG101-EN-3440 | 100% |  |
| CON-LEG101-LR-4360 |  | Embankments to the roads [Local – 03 ] | 15d | 2026-01-06 A | 2026-03-31 A | CON-LEG101-LR-3040, CON-LEG101-EN-1570, CON-LEG101-EN-1580, CON-LEG101-EN-1590, CON-LEG101-EN-1600, CON-LEG101-EN-1610, CON-LEG101-EN-3440 | 100% |  |
|  | 2 | **Asphalt Work** |  | 2026-01-29 | 2026-08-04 |  |  |  |
| CON-LEG101-LR-5620 |  | Subgrade [Local – 03 ] | 4d | 2026-01-29 A | 2026-04-30 A | CON-LEG101-LR-11270, CON-LEG101-LR-1740, CON-LEG101-LR-3040, CON-LEG101-LR-4360, CON-LEG101-LR-4820, CON-LEG101-LR-4240, CON-LEG101-EN-3440 | 100% |  |
| CON-LEG101-LR-5720 |  | Aggregate base course [Local – 03 ] | 4d | 2026-07-28 A | 2026-07-30 A | CON-LEG101-LR-11330, CON-LEG101-LR-5620, CON-LEG101-PR-1490, CON-LEG101-EN-3470 | 100% |  |
| CON-LEG101-LR-5820 |  | Prime Coat (MC1) [Local – 03 ] | 2d | 2026-08-02 A | 2026-08-02 A | CON-LEG101-LR-5720, CON-LEG101-LR-5810 | 100% |  |
| CON-LEG101-LR-5920 |  | Bituminous Base Course [Local – 03 ] | 3d | 2026-08-03 A | 2026-08-04 A | CON-LEG101-LR-5820, CON-LEG101-PR-1510 | 100% |  |
|  | 8 | **Electrical Works** |  | 2026-04-21 | 2027-07-05 |  |  |  |
|  | 2 | **Medium Voltage** |  | 2026-04-21 | 2027-07-05 |  |  |  |
| CON-LEG101-LR-7010 |  | Installation of Medium Voltage Cables Duct Banks [Local – 03 ] | 4d | 2026-04-21 A | 2026-05-07 A | CON-LEG101-PR-1400, CON-LEG101-LR-6920, CON-LEG101-PR-1320 | 100% |  |
| CON-LEG101-LR-6920 |  | Excavation for Medium Voltage trench [Local – 03 ] | 3d | 2027-06-13 | 2027-06-15 | CON-LEG101-PR-1880, CON-LEG101-LR-6910, CON-LEG101-LR-2120, CON-LEG101-LR-4240, CON-LEG101-EN-1660, CON-LEG101-EN-3440, CON-LEG101-LR-7710 |  | -147.5d |
| CON-LEG101-LR-7100 |  | Installation of Medium Voltage Cables [Local – 03 ] | 5d | 2027-06-16 | 2027-06-21 | CON-LEG101-LR-7010 |  | -78.5d |

| ID | WBS | Task | Duration | Start | Finish | Predecessors | Complete | Total float |
| --- | --- | --- | --- | --- | --- | --- | --- | --- |
| CON-LEG101-LR-7190 |  | Installation of Straight joints cables [Local – 03 ] | 2d | 2027-06-22 | 2027-06-23 | CON-LEG101-PR-1450, CON-LEG101-LR-7100, CON-LEG101-PR-1300 |  | -78.5d |
| CON-LEG101-LR-7280 |  | Installation of Cable Termination for 13.8 kv 3Cx 500 mm², Al /XLPE/LLDPE [Local – 03 ] | 3d | 2027-06-24 | 2027-06-27 | CON-LEG101-PR-1450, CON-LEG101-LR-7190, CON-LEG101-PR-1300 |  | -78.5d |
| CON-LEG101-LR-7370 |  | Installation of Medium Voltage Switchgears [Local – 03 ] | 4d | 2027-06-28 | 2027-07-01 | CON-LEG101-PR-1450, CON-LEG101-LR-7280, CON-LEG101-PR-1300 |  | -78.5d |
| CON-LEG101-LR-7720 |  | Installation of Cable Termination [Local – 03 ] | 3d | 2027-07-03 | 2027-07-05 | CON-LEG101-LR-7370, CON-LEG101-PR-1450, CON-LEG101-PR-1300 |  | -78.5d |
|  | 3 | **Local – 04** |  | 2025-12-10 | 2027-07-10 |  |  |  |
|  | 7 | **Road Works** |  | 2025-12-10 | 2027-02-07 |  |  |  |
|  | 1 | **Earthworks and Site Grading** |  | 2025-12-10 | 2027-01-09 |  |  |  |
| CON-LEG101-LR-3130 |  | Parcrels Excavation for Roadway [Local – 04 ] | 18d | 2025-12-10 A | 2026-09-17 A | CON-LEG101-LR-1800, CON-LEG101-EN-1570, CON-LEG101-EN-1580, CON-LEG101-EN-1590, CON-LEG101-EN-1600, CON-LEG101-EN-1610, CON-LEG101-EN-3440 | 100% |  |
| CON-LEG101-LR-4860 |  | Embankments to the parcels for roads [Local – 04 ] | 21d | 2025-12-14 A | 2026-09-19 A | CON-LEG101-LR-4420, CON-LEG101-EN-1570, CON-LEG101-EN-1580, CON-LEG101-EN-1590, CON-LEG101-EN-1600, CON-LEG101-EN-1610, CON-LEG101-EN-3440 | 100% |  |
| CON-LEG101-LR-1800 |  | Excavation for Roadway [Local – 04 ] | 15d | 2026-11-29 | 2026-12-15 | CON-LEG101-SD-1000, CON-LEG101-LR-1740, CON-LEG101-EN-1570, CON-LEG101-EN-1580, CON-LEG101-EN-1590, CON-LEG101-EN-1600, CON-LEG101-EN-1610, CON-LEG101-EN-3440 |  | -44.74d |
| CON-LEG101-LR-4420 |  | Embankments to the roads [Local – 04 ] | 21d | 2026-12-16 | 2027-01-09 | CON-LEG101-LR-3130, CON-LEG101-EN-1570, CON-LEG101-EN-1580, CON-LEG101-EN-1590, CON-LEG101-EN-1600, CON-LEG101-EN-1610, CON-LEG101-EN-3440 |  | 40.5d |
|  | 2 | **Asphalt Work** |  | 2027-01-10 | 2027-02-07 |  |  |  |
| CON-LEG101-LR-5630 |  | Subgrade [Local – 04 ] | 12d | 2027-01-10 | 2027-01-23 | CON-LEG101-LR-3540, CON-LEG101-LR-11380, CON-LEG101-LR-4860, CON-LEG101-LR-1800, CON-LEG101-LR-3130, CON-LEG101-LR-4420, CON-LEG101-LR-4250, CON-LEG101-LR-3450, CON-LEG101-EN-3440 |  | 40.5d |
| CON-LEG101-LR-5730 |  | Aggregate base course [Local – 04 ] | 8d | 2027-01-25 | 2027-02-02 | CON-LEG101-LR-11430, CON-LEG101-LR-5630, CON-LEG101-PR-1490, CON-LEG101-EN-3470 |  | 39.5d |
| CON-LEG101-LR-5830 |  | Prime Coat (MC1) [Local – 04 ] | 2d | 2027-02-03 | 2027-02-04 | CON-LEG101-LR-5730 |  | 39.5d |
| CON-LEG101-LR-5930 |  | Bituminous Base Course [Local – 04 ] | 2d | 2027-02-06 | 2027-02-07 | CON-LEG101-LR-5830, CON-LEG101-PR-1510 |  | 39.5d |
|  | 1 | **Electric Works** |  | 2027-06-13 | 2027-07-10 |  |  |  |
|  | 2 | **Medium Voltage** |  | 2027-06-13 | 2027-07-10 |  |  |  |
| CON-LEG101-LR-6930 |  | Excavation for Medium Voltage trench [Local – 04 ] | 4d | 2027-06-13 | 2027-06-16 | CON-LEG101-PR-1880, CON-LEG101-LR-6920 SS, CON-LEG101-LR-3450, CON-LEG101-LR-4250, CON-LEG101-EN-1660, CON-LEG101-EN-3440 |  | -147.5d |
| CON-LEG101-LR-7020 |  | Installation of Medium Voltage Cables Duct Banks [Local – 04 ] | 3d | 2027-06-17 | 2027-06-20 | CON-LEG101-PR-1400, CON-LEG101-LR-6930, CON-LEG101-PR-1320 |  | -82.5d |
| CON-LEG101-LR-7110 |  | Installation of Medium Voltage Cables [Local – 04 ] | 6d | 2027-06-21 | 2027-06-27 | CON-LEG101-LR-7020 |  | -82.5d |
| CON-LEG101-LR-7200 |  | Installation of Straight joints cables [Local – 04 ] | 3d | 2027-06-28 | 2027-06-30 | CON-LEG101-PR-1450, CON-LEG101-LR-7110, CON-LEG101-PR-1300 |  | -82.5d |
| CON-LEG101-LR-7290 |  | Installation of Cable Termination for 13.8 kv 3Cx 500 mm², Al /XLPE/LLDPE [Local – 04 ] | 3d | 2027-07-01 | 2027-07-04 | CON-LEG101-PR-1450, CON-LEG101-LR-7200, CON-LEG101-PR-1300 |  | -82.5d |
| CON-LEG101-LR-7380 |  | Installation of Medium Voltage Switchgears [Local – 04 ] | 2d | 2027-07-05 | 2027-07-06 | CON-LEG101-PR-1450, CON-LEG101-LR-7290, CON-LEG101-PR-1300 |  | -82.5d |
| CON-LEG101-LR-7730 |  | Installation of Cable Termination [Local – 04 ] | 3d | 2027-07-07 | 2027-07-10 | CON-LEG101-LR-7380, CON-LEG101-PR-1450, CON-LEG101-PR-1300 |  | -82.5d |
|  | 5 | **Local – 05** |  | 2025-12-04 | 2027-07-04 |  |  |  |
|  | 7 | **Road Works** |  | 2025-12-04 | 2026-09-09 |  |  |  |
|  | 1 | **Earthworks and Site Grading** |  | 2025-12-04 | 2026-09-09 |  |  |  |
| CON-LEG101-LR-3190 |  | Parcrels Excavation for Roadway [Local – 05 ] | 21d | 2025-12-04 A | 2026-09-09 A | CON-LEG101-LR-1900, CON-LEG101-EN-1570, CON-LEG101-EN-1580, CON-LEG101-EN-1590, CON-LEG101-EN-1600, CON-LEG101-EN-1610, CON-LEG101-EN-3440 | 100% |  |
| CON-LEG101-LR-4930 |  | Embankments to the parcels for roads [Local – 05 ] | 15d | 2025-12-07 A | 2026-07-09 A | CON-LEG101-LR-4520, CON-LEG101-EN-1570, CON-LEG101-EN-1580, CON-LEG101-EN-1590, CON-LEG101-EN-1600, CON-LEG101-EN-1610, CON-LEG101-EN-3440, CON-LEG101-LR-4860 | 100% |  |
| CON-LEG101-LR-1900 |  | Excavation for Roadway [Local – 05 ] | 21d | 2025-12-30 A | 2026-01-01 A | CON-LEG101-SD-1000, CON-LEG101-LR-1800, CON-LEG101-EN-1570, CON-LEG101-EN-1580, CON-LEG101-EN-1590, CON-LEG101-EN-1600, CON-LEG101-EN-1610, CON-LEG101-EN-3440 | 100% |  |
| CON-LEG101-LR-4520 |  | Embankments to the roads [Local – 05 ] | 18d | 2026-01-03 A | 2026-01-20 A | CON-LEG101-LR-3190, CON-LEG101-EN-1570, CON-LEG101-EN-1580, CON-LEG101-EN-1590, CON-LEG101-EN-1600, CON-LEG101-EN-1610, CON-LEG101-EN-3440 | 100% |  |
|  | 2 | **Asphalt Work** |  | 2026-01-12 | 2026-06-23 |  |  |  |
| CON-LEG101-LR-5640 |  | Subgrade [Local – 05 ] | 10d | 2026-01-12 A | 2026-02-10 A | CON-LEG101-LR-3550, CON-LEG101-LR-11470, CON-LEG101-LR-4930, CON-LEG101-LR-1900, CON-LEG101-LR-3190, CON-LEG101-LR-4520, CON-LEG101-LR-4260, CON-LEG101-LR-3460, CON-LEG101-EN-3440 | 100% |  |
| CON-LEG101-LR-5740 |  | Aggregate base course [Local – 05 ] | 4d | 2026-05-31 A | 2026-06-21 A | CON-LEG101-LR-11520, CON-LEG101-LR-5640, CON-LEG101-PR-1490, CON-LEG101-EN-3470 | 100% |  |
| CON-LEG101-LR-5840 |  | Prime Coat (MC1) [Local – 05 ] | 2d | 2026-06-11 A | 2026-06-22 A | CON-LEG101-LR-5740 | 100% |  |
| CON-LEG101-LR-5940 |  | Bituminous Base Course [Local – 05 ] | 2d | 2026-06-15 A | 2026-06-23 A | CON-LEG101-LR-5840 SS, CON-LEG101-PR-1510 | 100% |  |
|  | 8 | **Electrical Works** |  | 2026-05-02 | 2027-07-04 |  |  |  |
|  | 2 | **Medium Voltage** |  | 2026-05-02 | 2027-07-04 |  |  |  |
| CON-LEG101-LR-7030 |  | Installation of Medium Voltage Cables Duct Banks [Local – 05 ] | 2d | 2026-05-02 A | 2026-05-07 A | CON-LEG101-PR-1400, CON-LEG101-LR-6940, CON-LEG101-PR-1320 | 100% |  |
| CON-LEG101-LR-6940 |  | Excavation for Medium Voltage trench [Local – 05 ] | 4d | 2027-06-17 | 2027-06-21 | CON-LEG101-PR-1880, CON-LEG101-LR-4260, CON-LEG101-LR-11470, CON-LEG101-LR-3550, CON-LEG101-LR-3460, CON-LEG101-LR-6930, CON-LEG101-EN-1660, CON-LEG101-EN-3440 |  | -77.5d |
| CON-LEG101-LR-7120 |  | Installation of Medium Voltage Cables [Local – 05 ] | 4d | 2027-06-22 | 2027-06-26 | CON-LEG101-LR-7030 |  | -77.5d |
| CON-LEG101-LR-7210 |  | Installation of Straight joints cables [Local – 05 ] | 2d | 2027-06-27 | 2027-06-28 | CON-LEG101-PR-1450, CON-LEG101-LR-7120, CON-LEG101-PR-1300 |  | -77.5d |
| CON-LEG101-LR-7300 |  | Installation of Cable Termination for 13.8 kv 3Cx 500 mm², Al /XLPE/LLDPE [Local – 05 ] | 2d | 2027-06-29 | 2027-06-30 | CON-LEG101-PR-1450, CON-LEG101-LR-7210, CON-LEG101-PR-1300 |  | -77.5d |
| CON-LEG101-LR-7390 |  | Installation of Medium Voltage Switchgears [Local – 05 ] | 2d | 2027-07-01 | 2027-07-03 | CON-LEG101-PR-1450, CON-LEG101-LR-7300, CON-LEG101-PR-1300 |  | -77.5d |
| CON-LEG101-LR-7740 |  | Installation of Cable Termination [Local – 05 ] | 3d | 2027-07-01 | 2027-07-04 | CON-LEG101-LR-7390 SS, CON-LEG101-PR-1450, CON-LEG101-PR-1300 |  | -77.5d |
|  | 6 | **Local – 06** |  | 2025-12-08 | 2027-07-03 |  |  |  |
|  | 7 | **Road Works** |  | 2025-12-08 | 2026-08-20 |  |  |  |
|  | 1 | **Earthworks and Site Grading** |  | 2025-12-08 | 2026-08-20 |  |  |  |
| CON-LEG101-LR-3290 |  | Parcrels Excavation for Roadway [Local – 06 ] | 20d | 2025-12-08 A | 2026-08-19 A | CON-LEG101-LR-1990, CON-LEG101-EN-1570, CON-LEG101-EN-1580, CON-LEG101-EN-1590, CON-LEG101-EN-1600, CON-LEG101-EN-1610, CON-LEG101-EN-3440 | 100% |  |
| CON-LEG101-LR-5000 |  | Embankments to the parcels for roads [Local – 06 ] | 12d | 2025-12-14 A | 2026-08-20 A | CON-LEG101-LR-4540, CON-LEG101-EN-1570, CON-LEG101-EN-1580, CON-LEG101-EN-1590, CON-LEG101-EN-1600, CON-LEG101-EN-1610, CON-LEG101-EN-3440, CON-LEG101-LR-4930 | 100% |  |
| CON-LEG101-LR-1990 |  | Excavation for Roadway [Local – 06 ] | 14d | 2025-12-29 A | 2026-01-05 A | CON-LEG101-SD-1000, CON-LEG101-LR-1900, CON-LEG101-EN-1570, CON-LEG101-EN-1580, CON-LEG101-EN-1590, CON-LEG101-EN-1600, CON-LEG101-EN-1610, CON-LEG101-EN-3440 | 100% |  |
| CON-LEG101-LR-4540 |  | Embankments to the roads [Local – 06 ] | 20d | 2025-12-31 A | 2026-01-01 A | CON-LEG101-LR-3290, CON-LEG101-EN-1570, CON-LEG101-EN-1580, CON-LEG101-EN-1590, CON-LEG101-EN-1600, CON-LEG101-EN-1610, CON-LEG101-EN-3440 | 100% |  |
|  | 2 | **Asphalt Work** |  | 2026-01-13 | 2026-07-06 |  |  |  |
| CON-LEG101-LR-5650 |  | Subgrade [Local – 06 ] | 6d | 2026-01-13 A | 2026-01-25 A | CON-LEG101-LR-3560, CON-LEG101-LR-11560, CON-LEG101-LR-5000, CON-LEG101-LR-1990, CON-LEG101-LR-3290, CON-LEG101-LR-4540, CON-LEG101-LR-4280, CON-LEG101-LR-3480, CON-LEG101-EN-3440 | 100% |  |
| CON-LEG101-LR-5750 |  | Aggregate base course [Local – 06 ] | 4d | 2026-06-27 A | 2026-06-29 A | CON-LEG101-LR-11610, CON-LEG101-LR-5650, CON-LEG101-PR-1490, CON-LEG101-EN-3470 | 100% |  |
| CON-LEG101-LR-5850 |  | Prime Coat (MC1) [Local – 06 ] | 2d | 2026-07-01 A | 2026-07-02 A | CON-LEG101-LR-5750 | 100% |  |
| CON-LEG101-LR-5950 |  | Bituminous Base Course [Local – 06 ] | 3d | 2026-07-04 A | 2026-07-06 A | CON-LEG101-LR-5850, CON-LEG101-PR-1510 | 100% |  |
|  | 8 | **Electrical Works** |  | 2026-06-17 | 2027-07-03 |  |  |  |
|  | 2 | **Medium Voltage** |  | 2026-06-17 | 2027-07-03 |  |  |  |
| CON-LEG101-LR-7040 |  | Installation of Medium Voltage Cables Duct Banks [Local – 06 ] | 3d | 2026-06-17 A | 2026-06-18 A | CON-LEG101-LR-6950, CON-LEG101-PR-1320 | 100% |  |
| CON-LEG101-LR-6950 |  | Excavation for Medium Voltage trench [Local – 06 ] | 3d | 2027-06-19 | 2027-06-21 | CON-LEG101-PR-1880, CON-LEG101-LR-4280, CON-LEG101-LR-11560, CON-LEG101-LR-3480, CON-LEG101-LR-3560, CON-LEG101-LR-6940 FF, CON-LEG101-EN-1660, CON-LEG101-EN-3440 |  | -76.5d |
| CON-LEG101-LR-7130 |  | Installation of Medium Voltage Cables [Local – 06 ] | 3d | 2027-06-22 | 2027-06-24 | CON-LEG101-LR-7040 |  | -76.5d |
| CON-LEG101-LR-7220 |  | Installation of Straight joints cables [Local – 06 ] | 2d | 2027-06-26 | 2027-06-27 | CON-LEG101-LR-7130, CON-LEG101-PR-1300 |  | -76.5d |
| CON-LEG101-LR-7310 |  | Installation of Cable Termination for 13.8 kv 3Cx 500 mm², Al /XLPE/LLDPE [Local – 06 ] | 2d | 2027-06-28 | 2027-06-29 | CON-LEG101-PR-1450, CON-LEG101-LR-7220, CON-LEG101-PR-1300 |  | -76.5d |
| CON-LEG101-LR-7400 |  | Installation of Medium Voltage Switchgears [Local – 06 ] | 2d | 2027-06-30 | 2027-07-01 | CON-LEG101-PR-1450, CON-LEG101-LR-7310, CON-LEG101-PR-1300 |  | -76.5d |
| CON-LEG101-LR-7750 |  | Installation of Cable Termination [Local – 06 ] | 3d | 2027-06-30 | 2027-07-03 | CON-LEG101-LR-7400 SS, CON-LEG101-PR-1450, CON-LEG101-PR-1300 |  | -76.5d |
|  | 7 | **Local – 07** |  | 2025-12-07 | 2027-07-01 |  |  |  |
|  | 7 | **Road Works** |  | 2025-12-07 | 2026-12-16 |  |  |  |
|  | 1 | **Earthworks and Site Grading** |  | 2025-12-07 | 2026-12-16 |  |  |  |

| ID | WBS | Task | Duration | Start | Finish | Predecessors | Complete | Total float |
| --- | --- | --- | --- | --- | --- | --- | --- | --- |
| CON-LEG101-LR-3380 |  | Parcrels Excavation for Roadway [Local – 07 ] | 14d | 2025-12-07 A | 2025-12-10 A | CON-LEG101-LR-2080, CON-LEG101-EN-1570, CON-LEG101-EN-1580, CON-LEG101-EN-1590, CON-LEG101-EN-1600, CON-LEG101-EN-1610, CON-LEG101-EN-3440 | 100% |  |
| CON-LEG101-LR-5070 |  | Embankments to the parcels for roads [Local – 07 ] | 14d | 2025-12-11 A | 2026-12-16 | CON-LEG101-LR-4550, CON-LEG101-EN-1570, CON-LEG101-EN-1580, CON-LEG101-EN-1590, CON-LEG101-EN-1600, CON-LEG101-EN-1610, CON-LEG101-EN-3440 | 98% | 85.22d |
| CON-LEG101-LR-2080 |  | Excavation for Roadway [Local – 07 ] | 10d | 2026-01-01 A | 2026-01-07 A | CON-LEG101-SD-1000, CON-LEG101-LR-1990, CON-LEG101-EN-1570, CON-LEG101-EN-1580, CON-LEG101-EN-1590, CON-LEG101-EN-1600, CON-LEG101-EN-1610, CON-LEG101-EN-3440 | 100% |  |
| CON-LEG101-LR-4550 |  | Embankments to the roads [Local – 07 ] | 14d | 2026-01-08 A | 2026-01-24 A | CON-LEG101-LR-3380, CON-LEG101-EN-1570, CON-LEG101-EN-1580, CON-LEG101-EN-1590, CON-LEG101-EN-1600, CON-LEG101-EN-1610, CON-LEG101-EN-3440 | 100% |  |
|  | 2 | **Asphalt Work** |  | 2026-01-24 | 2026-06-30 |  |  |  |
| CON-LEG101-LR-5660 |  | Subgrade [Local – 07 ] | 5d | 2026-01-24 A | 2026-01-26 A | CON-LEG101-LR-3570, CON-LEG101-LR-11650, CON-LEG101-LR-5070, CON-LEG101-LR-2080, CON-LEG101-LR-3380, CON-LEG101-LR-4550, CON-LEG101-LR-4290, CON-LEG101-LR-3490, CON-LEG101-EN-3440 | 100% |  |
| CON-LEG101-LR-5760 |  | Aggregate base course [Local – 07 ] | 4d | 2026-06-21 A | 2026-06-23 A | CON-LEG101-LR-11700, CON-LEG101-LR-5660, CON-LEG101-PR-1490, CON-LEG101-EN-3470 | 100% |  |
| CON-LEG101-LR-5860 |  | Prime Coat (MC1) [Local – 07 ] | 3d | 2026-06-27 A | 2026-06-28 A | CON-LEG101-LR-5760 | 100% |  |
| CON-LEG101-LR-5960 |  | Bituminous Base Course [Local – 07 ] | 3d | 2026-06-27 A | 2026-06-30 A | CON-LEG101-LR-5860, CON-LEG101-PR-1510 | 100% |  |
|  | 8 | **Electrical Works** |  | 2026-05-20 | 2027-07-01 |  |  |  |
|  | 2 | **Medium Voltage** |  | 2026-05-20 | 2027-07-01 |  |  |  |
| CON-LEG101-LR-7050 |  | Installation of Medium Voltage Cables Duct Banks [Local – 07 ] | 3d | 2026-05-20 A | 2026-05-21 A | CON-LEG101-PR-1400, CON-LEG101-LR-6960, CON-LEG101-PR-1320 | 100% |  |
| CON-LEG101-LR-6960 |  | Excavation for Medium Voltage trench [Local – 07 ] | 3d | 2027-06-19 | 2027-06-21 | CON-LEG101-PR-1880, CON-LEG101-LR-4290, CON-LEG101-LR-11650, CON-LEG101-LR-3490, CON-LEG101-LR-3570, CON-LEG101-LR-6950 SS, CON-LEG101-EN-1660, CON-LEG101-EN-3440 |  | -75.5d |
| CON-LEG101-LR-7140 |  | Installation of Medium Voltage Cables [Local – 07 ] | 3d | 2027-06-22 | 2027-06-24 | CON-LEG101-LR-7050 |  | -75.5d |
| CON-LEG101-LR-7230 |  | Installation of Straight joints cables [Local – 07 ] | 2d | 2027-06-26 | 2027-06-27 | CON-LEG101-PR-1450, CON-LEG101-LR-7140, CON-LEG101-PR-1300 |  | -75.5d |
| CON-LEG101-LR-7320 |  | Installation of Cable Termination for 13.8 kv 3Cx 500 mm², Al /XLPE/LLDPE [Local – 07 ] | 2d | 2027-06-28 | 2027-06-29 | CON-LEG101-PR-1450, CON-LEG101-LR-7230, CON-LEG101-PR-1300 |  | -75.5d |
| CON-LEG101-LR-7410 |  | Installation of Medium Voltage Switchgears [Local – 07 ] | 2d | 2027-06-30 | 2027-07-01 | CON-LEG101-PR-1450, CON-LEG101-LR-7320, CON-LEG101-PR-1300 |  | -75.5d |
| CON-LEG101-LR-7760 |  | Installation of Cable Termination [Local – 07 ] | 2d | 2027-06-30 | 2027-07-01 | CON-LEG101-LR-7410 SS, CON-LEG101-PR-1450, CON-LEG101-PR-1300 |  | -75.5d |
|  | 8 | **Local – 08** |  | 2025-12-23 | 2026-08-03 |  |  |  |
|  | 7 | **Road Works** |  | 2025-12-23 | 2026-08-03 |  |  |  |
|  | 1 | **Earthworks and Site Grading** |  | 2025-12-23 | 2026-07-21 |  |  |  |
| CON-LEG101-LR-3470 |  | Parcrels Excavation for Roadway [Local – 08 ] | 10d | 2025-12-23 A | 2026-07-20 A | CON-LEG101-LR-2180, CON-LEG101-EN-1570, CON-LEG101-EN-1580, CON-LEG101-EN-1590, CON-LEG101-EN-1600, CON-LEG101-EN-1610, CON-LEG101-EN-3440, CON-LEG101-LR-3380 | 100% |  |
| CON-LEG101-LR-4560 |  | Embankments to the roads [Local – 08 ] | 8d | 2026-04-05 A | 2026-04-27 A | CON-LEG101-LR-3470, CON-LEG101-EN-1570, CON-LEG101-EN-1580, CON-LEG101-EN-1590, CON-LEG101-EN-1600, CON-LEG101-EN-1610, CON-LEG101-EN-3440 | 100% |  |
| CON-LEG101-LR-5140 |  | Embankments to the parcels for roads [Local – 08 ] | 10d | 2026-04-05 A | 2026-07-21 A | CON-LEG101-LR-4560, CON-LEG101-EN-1570, CON-LEG101-EN-1580, CON-LEG101-EN-1590, CON-LEG101-EN-1600, CON-LEG101-EN-1610, CON-LEG101-EN-3440 | 100% |  |
| CON-LEG101-LR-2180 |  | Excavation for Roadway [Local – 08 ] | 10d | 2026-04-07 A | 2026-04-26 A | CON-LEG101-SD-1000, CON-LEG101-LR-1900 SS+10d, CON-LEG101-EN-1570, CON-LEG101-EN-1580, CON-LEG101-EN-1590, CON-LEG101-EN-1600, CON-LEG101-EN-1610, CON-LEG101-EN-3440 | 100% |  |
|  | 2 | **Asphalt Work** |  | 2026-06-17 | 2026-08-03 |  |  |  |
| CON-LEG101-LR-5670 |  | Subgrade [Local – 08 ] | 7d | 2026-06-17 A | 2026-06-30 A | CON-LEG101-LR-11740, CON-LEG101-LR-5140, CON-LEG101-LR-2180, CON-LEG101-LR-3470, CON-LEG101-LR-4560, CON-LEG101-LR-4300, CON-LEG101-EN-3440 | 100% |  |
| CON-LEG101-LR-5770 |  | Aggregate base course [Local – 08 ] | 4d | 2026-07-25 A | 2026-07-28 A | CON-LEG101-LR-11790, CON-LEG101-LR-5670, CON-LEG101-PR-1490, CON-LEG101-EN-3470 | 100% |  |
| CON-LEG101-LR-5870 |  | Prime Coat (MC1) [Local – 08 ] | 2d | 2026-08-01 A | 2026-08-01 A | CON-LEG101-LR-5770 | 100% |  |
| CON-LEG101-LR-5970 |  | Bituminous Base Course [Local – 08 ] | 2d | 2026-08-02 A | 2026-08-03 A | CON-LEG101-LR-5870, CON-LEG101-PR-1510 | 100% |  |
|  | 6 | **Deep Infrastructure network** |  | 2025-12-27 | 2027-02-08 |  |  |  |
|  | 1 | **Local – 01** |  | 2025-12-27 | 2026-12-01 |  |  |  |
|  | 1 | **LOCAL - 01 Segment-01 (From 0+000 to 1+066)** |  | 2025-12-27 | 2026-11-30 |  |  |  |
|  | 1 | **Stormwater Utilities** |  | 2025-12-27 | 2026-11-30 |  |  |  |
|  | 2 | **Pipe Work** |  | 2025-12-27 | 2026-03-17 |  |  |  |
| CON-LEG101-LR-3580 |  | Excavation for Stormwater Utilities Network [Local – 01 Segment-01] | 10d | 2025-12-27 A | 2026-01-22 A | CON-LEG101-LR-4070, CON-LEG101-SD-1000, CON-LEG101-LR-1360, CON-LEG101-LR-2760, CON-LEG101-EN-1780, CON-LEG101-EN-1790, CON-LEG101-EN-1800, CON-LEG101-EN-3440 | 100% |  |
| CON-LEG101-LR-3680 |  | Granular bedding for Stormwater Utilities Network [Local – 01 Segment-01] | 10d | 2025-12-28 A | 2026-01-24 A | CON-LEG101-EN-1780, CON-LEG101-LR-3580 | 100% |  |
| CON-LEG101-LR-3780 |  | Installation of Pipe for Stormwater Utilities Network [Local – 01 Segment-01] | 10d | 2025-12-30 A | 2026-01-28 A | CON-LEG101-PR-2100, CON-LEG101-PR-2110, CON-LEG101-LR-3680, CON-LEG101-PR-1780, CON-LEG101-PR-1810 | 100% |  |
| CON-LEG101-LR-3980 |  | Granular Surround for Stormwater Utilities Network [Local – 01 Segment-01] | 4d | 2025-12-31 A | 2026-01-29 A | CON-LEG101-LR-3880, CON-LEG101-EN-3450 | 100% |  |
| CON-LEG101-LR-3880 |  | Testing for Stormwater Utilities Network [Local – 01 Segment-01] | 4d | 2026-01-02 A | 2026-03-12 A | CON-LEG101-LR-3780 | 100% |  |
| CON-LEG101-LR-4090 |  | Installation of Micron Marker Magnetic Tape [Local – 01 Segment-01] | 2d | 2026-01-12 A | 2026-03-15 A | CON-LEG101-LR-3980 | 100% |  |
| CON-LEG101-LR-4200 |  | Backfilling to Subgrade Elevation [Local – 01 Segment-01] | 6d | 2026-01-13 A | 2026-03-17 A | CON-LEG101-LR-4090, CON-LEG101-EN-3440 | 100% |  |
|  | 1 | **Manhole** |  | 2025-12-27 | 2026-11-29 |  |  |  |
| CON-LEG101-LR-10890 |  | Excavation of Inlet Manholes [Local – 01 Segment-01] | 15d | 2025-12-27 A | 2026-01-22 A | CON-LEG101-LR-3580 | 100% |  |
| CON-LEG101-LR-10900 |  | PC of Inlet Manholes [Local – 01 Segment-01] | 6d | 2026-01-14 A | 2026-01-25 A | CON-LEG101-LR-10890 | 100% |  |
| CON-LEG101-LR-4320 |  | Installation of Inlet Manholes [Local – 01 Segment-01] | 14d | 2026-01-17 A | 2026-04-26 A | CON-LEG101-LR-10900, CON-LEG101-LR-3780, CON-LEG101-PR-1980 | 100% |  |
| CON-LEG101-LR-10910 |  | Backfilling of Inlet Manholes [Local – 01 Segment-01] | 6d | 2026-03-24 A | 2026-04-28 A | CON-LEG101-LR-4320 | 100% |  |
| CON-LEG101-LR-10920 |  | Finishing and Testing of Inlet Manholes [Local – 01 Segment-01] | 15d | 2026-03-28 A | 2026-11-29 | CON-LEG101-LR-10910 | 95% | 99.75d |
|  | 3 | **Concrete Chambers/Outfalls** |  | 2026-03-26 | 2026-11-30 |  |  |  |
| CON-LEG101-LR-10840 |  | Excavation of Concrete chambers [Local – 01 Segment-01] | 6d | 2026-03-26 A | 2026-04-09 A | CON-LEG101-LR-4200, CON-LEG101-LR-10910 | 100% |  |
| CON-LEG101-LR-10850 |  | PC of Concrete chambers [Local – 01 Segment-01] | 2d | 2026-04-01 A | 2026-04-12 A | CON-LEG101-LR-10840 | 100% |  |
| CON-LEG101-LR-10870 |  | Installation UPVC Pipes to Concrete chambers [Local – 01 Segment-01] | 8d | 2026-04-02 A | 2026-04-21 A | CON-LEG101-LR-4430, CON-LEG101-LR-10920 | 100% |  |
| CON-LEG101-LR-4430 |  | Installation of Concrete chambers [Local – 01 Segment-01] | 12d | 2026-04-13 A | 2026-04-21 A | CON-LEG101-LR-10850, CON-LEG101-LR-3780, CON-LEG101-PR-1990 | 100% |  |
| CON-LEG101-LR-10860 |  | Backfilling to Concrete chambers [Local – 01 Segment-01] | 6d | 2026-04-22 A | 2026-04-25 A | CON-LEG101-LR-10870, CON-LEG101-LR-4430 | 100% |  |
| CON-LEG101-LR-10880 |  | FInishing and Testing of Concrete chambers [Local – 01 Segment-01] | 10d | 2026-07-01 A | 2026-11-30 | CON-LEG101-LR-10870, CON-LEG101-LR-4430, CON-LEG101-LR-10860 | 95% | 112.6d |
|  | 4 | **Sanitary Sewerage** |  | 2026-01-12 | 2026-11-29 |  |  |  |
|  | 2 | **Pipe Work** |  | 2026-01-12 | 2026-03-07 |  |  |  |
| CON-LEG101-LR-2780 |  | Excavation for Sanitary Sewerage Network [Local – 01 Segment-01] | 10d | 2026-01-12 A | 2026-01-24 A | CON-LEG101-LR-3580, CON-LEG101-EN-1750, CON-LEG101-EN-1760, CON-LEG101-EN-1770, CON-LEG101-EN-3440 | 100% |  |
| CON-LEG101-LR-2870 |  | Granular bedding for Sanitary Sewerage Network [Local – 01 Segment-01] | 4d | 2026-01-13 A | 2026-01-24 A | CON-LEG101-LR-2780 | 100% |  |
| CON-LEG101-LR-2960 |  | Installation of Pipe for Sanitary Sewerage Network [Local – 01 Segment-01] | 10d | 2026-01-15 A | 2026-01-28 A | CON-LEG101-PR-2560, CON-LEG101-LR-2870, CON-LEG101-PR-1720 | 100% |  |
| CON-LEG101-LR-3230 |  | Granular Surround for Sanitary Sewerage Network [Local – 01 Segment-01] | 4d | 2026-01-18 A | 2026-01-29 A | CON-LEG101-LR-3140, CON-LEG101-EN-3450 | 100% |  |
| CON-LEG101-LR-3140 |  | Concrete encasement, pipe dia 200 and 350 mm [Local – 01 Segment-01] | 3d | 2026-02-01 A | 2026-02-02 A | CON-LEG101-LR-3050, CON-LEG101-EN-3450, CON-LEG101-PR-1430 | 100% |  |
| CON-LEG101-LR-3050 |  | Testing for Sanitary Sewerage Network [Local – 01 Segment-01] | 4d | 2026-03-01 A | 2026-03-03 A | CON-LEG101-LR-2960 | 100% |  |
| CON-LEG101-LR-3320 |  | Installation of Micron Marker Magnetic Tape [Local – 01 Segment-01] | 2d | 2026-03-04 A | 2026-03-05 A | CON-LEG101-LR-3230 | 100% |  |
| CON-LEG101-LR-3410 |  | Backfilling to Subgrade Elevation [Local – 01 Segment-01] | 8d | 2026-03-04 A | 2026-03-07 A | CON-LEG101-LR-3320, CON-LEG101-EN-3440 | 100% |  |
|  | 1 | **Manhole** |  | 2026-01-13 | 2026-11-29 |  |  |  |
| CON-LEG101-LR-3500 |  | Installation of Fiberglass Manholes [Local – 01 Segment-01] | 20d | 2026-01-13 A | 2026-11-29 | CON-LEG101-PR-2570, CON-LEG101-LR-2960, CON-LEG101-PR-1750 | 95% | 48.5d |
|  | 2 | **LOCAL - 01 Segment-02 (From 1+066 to 2+133)** |  | 2026-01-21 | 2026-11-30 |  |  |  |
|  | 1 | **Stormwater Utilities** |  | 2026-01-21 | 2026-11-30 |  |  |  |
|  | 2 | **Pipe Work** |  | 2026-01-21 | 2026-05-14 |  |  |  |

| ID | WBS | Task | Duration | Start | Finish | Predecessors | Complete | Total float |
| --- | --- | --- | --- | --- | --- | --- | --- | --- |
| CON-LEG101-LR-3590 |  | Excavation for Stormwater Utilities Network [Local – 01 Segment-02] | 10d | 2026-01-21 A | 2026-02-10 A | CON-LEG101-LR-4170, CON-LEG101-LR-4640, CON-LEG101-SD-1000, CON-LEG101-LR-1450, CON-LEG101-EN-1780, CON-LEG101-EN-1790, CON-LEG101-EN-1800, CON-LEG101-EN-3440 | 100% |  |
| CON-LEG101-LR-3690 |  | Granular bedding for Stormwater Utilities Network [Local – 01 Segment-02] | 4d | 2026-01-24 A | 2026-02-12 A | CON-LEG101-LR-3590 | 100% |  |
| CON-LEG101-LR-3790 |  | Installation of Pipe for Stormwater Utilities Network [Local – 01 Segment-02] | 8d | 2026-01-28 A | 2026-04-09 A | CON-LEG101-PR-2100, CON-LEG101-PR-2110, CON-LEG101-LR-3690, CON-LEG101-PR-1780, CON-LEG101-PR-1810 | 100% |  |
| CON-LEG101-LR-3990 |  | Granular Surround for Stormwater Utilities Network [Local – 01 Segment-02] | 4d | 2026-01-29 A | 2026-04-11 A | CON-LEG101-LR-3890, CON-LEG101-EN-3450 | 100% |  |
| CON-LEG101-LR-3890 |  | Testing for Stormwater Utilities Network [Local – 01 Segment-02] | 4d | 2026-03-01 A | 2026-05-12 A | CON-LEG101-LR-3790 | 100% |  |
| CON-LEG101-LR-4100 |  | Installation of Micron Marker Magnetic Tape [Local – 01 Segment-02] | 2d | 2026-03-11 A | 2026-05-13 A | CON-LEG101-LR-3990 | 100% |  |
| CON-LEG101-LR-4210 |  | Backfilling to Subgrade Elevation [Local – 01 Segment-02] | 6d | 2026-03-12 A | 2026-05-14 A | CON-LEG101-LR-4100, CON-LEG101-EN-3440 | 100% |  |
|  | 1 | **Manhole** |  | 2026-01-21 | 2026-08-24 |  |  |  |
| CON-LEG101-LR-10930 |  | Excavation of Inlet Manholes [Local – 01 Segment-02] | 6d | 2026-01-21 A | 2026-03-10 A | CON-LEG101-LR-3590 | 100% |  |
| CON-LEG101-LR-10940 |  | PC of Inlet Manholes [Local – 01 Segment-02] | 3d | 2026-02-11 A | 2026-03-25 A | CON-LEG101-LR-10930 | 100% |  |
| CON-LEG101-LR-4330 |  | Installation of Inlet Manholes [Local – 01 Segment-02] | 10d | 2026-02-15 A | 2026-04-30 A | CON-LEG101-LR-10940, CON-LEG101-LR-3790, CON-LEG101-PR-1980 | 100% |  |
| CON-LEG101-LR-10960 |  | Backfilling of Inlet Manholes [Local – 01 Segment-02] | 6d | 2026-03-26 A | 2026-04-27 A | CON-LEG101-LR-4330 | 100% |  |
| CON-LEG101-LR-10970 |  | Finishing and Testing of Inlet Manholes [Local – 01 Segment-02] | 12d | 2026-03-28 A | 2026-08-24 A | CON-LEG101-LR-10960 | 100% |  |
|  | 3 | **Concrete Chambers/Outfalls** |  | 2026-04-14 | 2026-11-30 |  |  |  |
| CON-LEG101-LR-10980 |  | Excavation of Concrete chambers [Local – 01 Segment-02] | 10d | 2026-04-14 A | 2026-04-29 A | CON-LEG101-LR-10960, CON-LEG101-LR-4210 | 100% |  |
| CON-LEG101-LR-10990 |  | PC of Concrete chambers [Local – 01 Segment-02] | 2d | 2026-04-20 A | 2026-04-30 A | CON-LEG101-LR-10980 | 100% |  |
| CON-LEG101-LR-11010 |  | Installation UPVC Pipes to Concrete chambers [Local – 01 Segment-02] | 8d | 2026-04-21 A | 2026-05-05 A | CON-LEG101-LR-10980, CON-LEG101-LR-4440 | 100% |  |
| CON-LEG101-LR-4440 |  | Installation of Concrete chambers [Local – 01 Segment-02] | 15d | 2026-04-21 A | 2026-05-05 A | CON-LEG101-LR-10990, CON-LEG101-LR-4330, CON-LEG101-LR-3790, CON-LEG101-PR-1990 | 100% |  |
| CON-LEG101-LR-11020 |  | Backfilling to Concrete chambers [Local – 01 Segment-02] | 6d | 2026-04-25 A | 2026-05-07 A | CON-LEG101-LR-11010, CON-LEG101-LR-4440, CON-LEG101-LR-10970 | 100% |  |
| CON-LEG101-LR-11030 |  | FInishing and Testing of Concrete chambers [Local – 01 Segment-02] | 10d | 2026-07-04 A | 2026-11-30 | CON-LEG101-LR-11010, CON-LEG101-LR-11020, CON-LEG101-LR-10880 | 95% | 112.6d |
|  | 4 | **Sanitary Sewerage** |  | 2026-03-11 | 2026-11-29 |  |  |  |
|  | 2 | **Pipe Work** |  | 2026-03-11 | 2026-05-09 |  |  |  |
| CON-LEG101-LR-2790 |  | Excavation for Sanitary Sewerage Network [Local – 01 Segment-02] | 7d | 2026-03-11 A | 2026-04-07 A | CON-LEG101-LR-4170, CON-LEG101-LR-4640, CON-LEG101-EN-1750, CON-LEG101-EN-1760, CON-LEG101-EN-1770, CON-LEG101-EN-3440 | 100% |  |
| CON-LEG101-LR-2880 |  | Granular bedding for Sanitary Sewerage Network [Local – 01 Segment-02] | 4d | 2026-03-17 A | 2026-04-08 A | CON-LEG101-LR-2790 | 100% |  |
| CON-LEG101-LR-2970 |  | Installation of Pipe for Sanitary Sewerage Network [Local – 01 Segment-02] | 8d | 2026-03-24 A | 2026-04-09 A | CON-LEG101-PR-2560, CON-LEG101-LR-2880, CON-LEG101-PR-1720 | 100% |  |
| CON-LEG101-LR-3060 |  | Testing for Sanitary Sewerage Network [Local – 01 Segment-02] | 4d | 2026-04-01 A | 2026-05-06 A | CON-LEG101-LR-2970 | 100% |  |
| CON-LEG101-LR-3150 |  | Concrete encasement, pipe dia 200 and 350 mm [Local – 01 Segment-02] | 3d | 2026-04-02 A | 2026-04-11 A | CON-LEG101-LR-3060, CON-LEG101-EN-3450, CON-LEG101-PR-1430 | 100% |  |
| CON-LEG101-LR-3240 |  | Granular Surround for Sanitary Sewerage Network [Local – 01 Segment-02] | 4d | 2026-04-04 A | 2026-04-11 A | CON-LEG101-LR-3150, CON-LEG101-EN-3450 | 100% |  |
| CON-LEG101-LR-3330 |  | Installation of Micron Marker Magnetic Tape [Local – 01 Segment-02] | 2d | 2026-04-11 A | 2026-05-07 A | CON-LEG101-LR-3240 | 100% |  |
| CON-LEG101-LR-3420 |  | Backfilling to Subgrade Elevation [Local – 01 Segment-02] | 6d | 2026-04-12 A | 2026-05-09 A | CON-LEG101-LR-3330, CON-LEG101-EN-3440 | 100% |  |
|  | 1 | **Manhole** |  | 2026-03-11 | 2026-11-29 |  |  |  |
| CON-LEG101-LR-3510 |  | Installation of Fiberglass Manholes [Local – 01 Segment-02] | 21d | 2026-03-11 A | 2026-11-29 | CON-LEG101-PR-2570, CON-LEG101-LR-2970, CON-LEG101-PR-1750 | 98% | 50.08d |
|  | 3 | **LOCAL - 01 Segment-03 (From 2+133 to 3+200)** |  | 2026-01-01 | 2026-12-01 |  |  |  |
|  | 1 | **Stormwater Utilities** |  | 2026-01-01 | 2026-12-01 |  |  |  |
|  | 2 | **Pipe Work** |  | 2026-01-01 | 2026-03-12 |  |  |  |
| CON-LEG101-LR-3600 |  | Excavation for Stormwater Utilities Network [Local – 01 Segment-03] | 10d | 2026-01-01 A | 2026-02-10 A | CON-LEG101-LR-3590, CON-LEG101-SD-1000, CON-LEG101-LR-1540, CON-LEG101-EN-1780, CON-LEG101-EN-1790, CON-LEG101-EN-1800, CON-LEG101-EN-3440 | 100% |  |
| CON-LEG101-LR-3700 |  | Granular bedding for Stormwater Utilities Network [Local – 01 Segment-03] | 4d | 2026-01-03 A | 2026-02-12 A | CON-LEG101-LR-3600 | 100% |  |
| CON-LEG101-LR-3800 |  | Installation of Pipe for Stormwater Utilities Network [Local – 01 Segment-03] | 8d | 2026-01-04 A | 2026-02-14 A | CON-LEG101-PR-2100, CON-LEG101-PR-2110, CON-LEG101-LR-3700, CON-LEG101-PR-1780, CON-LEG101-PR-1810 | 100% |  |
| CON-LEG101-LR-4000 |  | Granular Surround for Stormwater Utilities Network [Local – 01 Segment-03] | 4d | 2026-01-05 A | 2026-02-15 A | CON-LEG101-LR-3900, CON-LEG101-EN-3450 | 100% |  |
| CON-LEG101-LR-3900 |  | Testing for Stormwater Utilities Network [Local – 01 Segment-03] | 4d | 2026-01-06 A | 2026-03-02 A | CON-LEG101-LR-3800 | 100% |  |
| CON-LEG101-LR-4110 |  | Installation of Micron Marker Magnetic Tape [Local – 01 Segment-03] | 2d | 2026-02-25 A | 2026-03-11 A | CON-LEG101-LR-4000 | 100% |  |
| CON-LEG101-LR-4220 |  | Backfilling to Subgrade Elevation [Local – 01 Segment-03] | 6d | 2026-02-25 A | 2026-03-12 A | CON-LEG101-LR-4110, CON-LEG101-EN-3440 | 100% |  |
|  | 1 | **Manhole** |  | 2026-01-01 | 2026-11-29 |  |  |  |
| CON-LEG101-LR-11040 |  | Excavation of Inlet Manholes [Local – 01 Segment-03] | 6d | 2026-01-01 A | 2026-02-10 A | CON-LEG101-LR-3600 | 100% |  |
| CON-LEG101-LR-11050 |  | PC of Inlet Manholes [Local – 01 Segment-03] | 3d | 2026-01-15 A | 2026-02-14 A | CON-LEG101-LR-11040 | 100% |  |
| CON-LEG101-LR-4340 |  | Installation of Inlet Manholes [Local – 01 Segment-03] | 14d | 2026-01-21 A | 2026-06-01 A | CON-LEG101-LR-11050, CON-LEG101-LR-3800, CON-LEG101-PR-1980 | 100% |  |
| CON-LEG101-LR-11060 |  | Backfilling of Inlet Manholes [Local – 01 Segment-03] | 6d | 2026-03-26 A | 2026-06-04 A | CON-LEG101-LR-4340 | 100% |  |
| CON-LEG101-LR-11070 |  | Finishing and Testing of Inlet Manholes [Local – 01 Segment-03] | 6d | 2026-03-28 A | 2026-11-29 | CON-LEG101-LR-11060, CON-LEG101-LR-4340, CON-LEG101-LR-10970 | 95% | 77.2d |
|  | 3 | **Concrete Chambers/Outfalls** |  | 2026-04-21 | 2026-12-01 |  |  |  |
| CON-LEG101-LR-11080 |  | Excavation of Concrete chambers [Local – 01 Segment-03] | 6d | 2026-04-21 A | 2026-07-01 A | CON-LEG101-LR-4340 | 100% |  |
| CON-LEG101-LR-11090 |  | PC of Concrete chambers [Local – 01 Segment-03] | 2d | 2026-04-23 A | 2026-07-01 A | CON-LEG101-LR-11080 | 100% |  |
| CON-LEG101-LR-4450 |  | Installation of Concrete chambers [Local – 01 Segment-03] | 10d | 2026-05-19 A | 2026-07-02 A | CON-LEG101-LR-11090, CON-LEG101-LR-4340, CON-LEG101-LR-3800, CON-LEG101-PR-1990 | 100% |  |
| CON-LEG101-LR-11110 |  | Installation UPVC Pipes to Concrete chambers [Local – 01 Segment-03] | 8d | 2026-05-20 A | 2026-07-02 A | CON-LEG101-LR-11080, CON-LEG101-LR-4450, CON-LEG101-LR-11070 | 100% |  |
| CON-LEG101-LR-11120 |  | Backfilling to Concrete chambers [Local – 01 Segment-03] | 6d | 2026-06-01 A | 2026-07-04 A | CON-LEG101-LR-11110 | 100% |  |
| CON-LEG101-LR-11130 |  | FInishing and Testing of Concrete chambers [Local – 01 Segment-03] | 6d | 2026-08-19 A | 2026-12-01 | CON-LEG101-LR-11110, CON-LEG101-LR-11120, CON-LEG101-LR-11030 | 95% | 112.6d |
|  | 4 | **Sanitary Sewerage** |  | 2026-04-01 | 2026-11-29 |  |  |  |
|  | 2 | **Pipe Work** |  | 2026-04-01 | 2026-05-24 |  |  |  |
| CON-LEG101-LR-2800 |  | Excavation for Sanitary Sewerage Network [Local – 01 Segment-03] | 10d | 2026-04-01 A | 2026-04-27 A | CON-LEG101-LR-3600, CON-LEG101-EN-1750, CON-LEG101-EN-1760, CON-LEG101-EN-1770, CON-LEG101-EN-3440 | 100% |  |
| CON-LEG101-LR-2890 |  | Granular bedding for Sanitary Sewerage Network [Local – 01 Segment-03] | 4d | 2026-04-07 A | 2026-04-29 A | CON-LEG101-LR-2800 | 100% |  |
| CON-LEG101-LR-2980 |  | Installation of Pipe for Sanitary Sewerage Network [Local – 01 Segment-03] | 10d | 2026-04-08 A | 2026-04-30 A | CON-LEG101-PR-2560, CON-LEG101-LR-2890, CON-LEG101-PR-1720 | 100% |  |
| CON-LEG101-LR-3070 |  | Testing for Sanitary Sewerage Network [Local – 01 Segment-03] | 4d | 2026-04-21 A | 2026-05-19 A | CON-LEG101-LR-2980 | 100% |  |
| CON-LEG101-LR-3160 |  | Concrete encasement, pipe dia 200 and 350 mm [Local – 01 Segment-03] | 3d | 2026-04-22 A | 2026-05-20 A | CON-LEG101-LR-3070, CON-LEG101-EN-3450, CON-LEG101-PR-1430 | 100% |  |
| CON-LEG101-LR-3250 |  | Granular Surround for Sanitary Sewerage Network [Local – 01 Segment-03] | 4d | 2026-04-23 A | 2026-05-20 A | CON-LEG101-LR-3160, CON-LEG101-EN-3450 | 100% |  |
| CON-LEG101-LR-3340 |  | Installation of Micron Marker Magnetic Tape [Local – 01 Segment-03] | 2d | 2026-04-25 A | 2026-05-21 A | CON-LEG101-LR-3250 | 100% |  |
| CON-LEG101-LR-3430 |  | Backfilling to Subgrade Elevation [Local – 01 Segment-03] | 6d | 2026-04-26 A | 2026-05-24 A | CON-LEG101-LR-3340, CON-LEG101-EN-3440 | 100% |  |
|  | 1 | **Manhole** |  | 2026-04-01 | 2026-11-29 |  |  |  |
| CON-LEG101-LR-3520 |  | Installation of Fiberglass Manholes [Local – 01 Segment-03] | 20d | 2026-04-01 A | 2026-11-29 | CON-LEG101-PR-2570, CON-LEG101-LR-2980, CON-LEG101-PR-1750 | 95% | 76.5d |
|  | 2 | **Local – 02** |  | 2026-02-12 | 2026-12-01 |  |  |  |
|  | 1 | **Stormwater Utilities** |  | 2026-02-19 | 2026-12-01 |  |  |  |
|  | 2 | **Pipe Work** |  | 2026-02-19 | 2026-04-28 |  |  |  |

| ID | WBS | Task | Duration | Start | Finish | Predecessors | Complete | Total float |
| --- | --- | --- | --- | --- | --- | --- | --- | --- |
| CON-LEG101-LR-3610 |  | Excavation for Stormwater Utilities Network [Local – 02 ] | 6d | 2026-02-19 A | 2026-03-28 A | CON-LEG101-LR-3580, CON-LEG101-SD-1000, CON-LEG101-LR-1630, CON-LEG101-EN-1780, CON-LEG101-EN-1790, CON-LEG101-EN-1800, CON-LEG101-EN-3440 | 100% |  |
| CON-LEG101-LR-3710 |  | Granular bedding for Stormwater Utilities Network [Local – 02 ] | 4d | 2026-02-25 A | 2026-04-22 A | CON-LEG101-LR-3610 | 100% |  |
| CON-LEG101-LR-3810 |  | Installation of Pipe for Stormwater Utilities Network [Local – 02 ] | 8d | 2026-02-26 A | 2026-04-23 A | CON-LEG101-PR-2100, CON-LEG101-PR-2110, CON-LEG101-LR-3710, CON-LEG101-PR-1780, CON-LEG101-PR-1810 | 100% |  |
| CON-LEG101-LR-4010 |  | Granular Surround for Stormwater Utilities Network [Local – 02 ] | 4d | 2026-04-09 A | 2026-04-26 A | CON-LEG101-LR-3910, CON-LEG101-EN-3450 | 100% |  |
| CON-LEG101-LR-3910 |  | Testing for Stormwater Utilities Network [Local – 02 ] | 4d | 2026-04-11 A | 2026-04-25 A | CON-LEG101-LR-3810 | 100% |  |
| CON-LEG101-LR-4120 |  | Installation of Micron Marker Magnetic Tape [Local – 02 ] | 2d | 2026-04-21 A | 2026-04-27 A | CON-LEG101-LR-4010 | 100% |  |
| CON-LEG101-LR-4230 |  | Backfilling to Subgrade Elevation [Local – 02 ] | 6d | 2026-04-22 A | 2026-04-28 A | CON-LEG101-LR-4120, CON-LEG101-EN-3440 | 100% |  |
|  | 1 | **Manhole** |  | 2026-02-19 | 2026-11-29 |  |  |  |
| CON-LEG101-LR-11140 |  | Excavation of Inlet Manholes [Local – 02 ] | 10d | 2026-02-19 A | 2026-03-28 A | CON-LEG101-LR-3610 | 100% |  |
| CON-LEG101-LR-11150 |  | PC of Inlet Manholes [Local – 02 ] | 5d | 2026-03-25 A | 2026-03-29 A | CON-LEG101-LR-11140 | 100% |  |
| CON-LEG101-LR-4350 |  | Installation of Inlet Manholes [Local – 02 ] | 14d | 2026-03-26 A | 2026-06-04 A | CON-LEG101-LR-11150, CON-LEG101-LR-3810, CON-LEG101-PR-1980 | 100% |  |
| CON-LEG101-LR-11170 |  | Backfilling of Inlet Manholes [Local – 02 ] | 6d | 2026-04-15 A | 2026-06-07 A | CON-LEG101-LR-4350 | 100% |  |
| CON-LEG101-LR-11180 |  | Finishing and Testing of Inlet Manholes [Local – 02 ] | 10d | 2026-07-05 A | 2026-11-29 | CON-LEG101-LR-11170, CON-LEG101-LR-4350, CON-LEG101-LR-11070 | 95% | 99.7d |
|  | 3 | **Concrete Chambers/Outfalls** |  | 2026-05-02 | 2026-12-01 |  |  |  |
| CON-LEG101-LR-11190 |  | Excavation of Concrete chambers [Local – 02 ] | 6d | 2026-05-02 A | 2026-05-10 A | CON-LEG101-LR-4350, CON-LEG101-LR-11180 | 100% |  |
| CON-LEG101-LR-11200 |  | PC of Concrete chambers [Local – 02 ] | 2d | 2026-05-03 A | 2026-05-11 A | CON-LEG101-LR-11190 | 100% |  |
| CON-LEG101-LR-11210 |  | Installation UPVC Pipes to Concrete chambers [Local – 02 ] | 8d | 2026-05-04 A | 2026-05-13 A | CON-LEG101-LR-11190, CON-LEG101-LR-4460 | 100% |  |
| CON-LEG101-LR-4460 |  | Installation of Concrete chambers [Local – 02 ] | 8d | 2026-05-04 A | 2026-05-12 A | CON-LEG101-LR-11200, CON-LEG101-LR-4350, CON-LEG101-LR-3810, CON-LEG101-PR-1990 | 100% |  |
| CON-LEG101-LR-11220 |  | Backfilling to Concrete chambers [Local – 02 ] | 6d | 2026-05-06 A | 2026-05-21 A | CON-LEG101-LR-11210, CON-LEG101-LR-4460 | 100% |  |
| CON-LEG101-LR-11230 |  | FInishing and Testing of Concrete chambers [Local – 02 ] | 8d | 2026-07-05 A | 2026-12-01 | CON-LEG101-LR-11210, CON-LEG101-LR-11220, CON-LEG101-LR-11130 | 95% | 112.6d |
|  | 4 | **Sanitary Sewerage** |  | 2026-02-12 | 2026-11-29 |  |  |  |
|  | 2 | **Pipe Work** |  | 2026-02-12 | 2026-06-08 |  |  |  |
| CON-LEG101-LR-2810 |  | Excavation for Sanitary Sewerage Network [Local – 02 ] | 10d | 2026-02-12 A | 2026-05-19 A | CON-LEG101-LR-3610, CON-LEG101-EN-1750, CON-LEG101-EN-1760, CON-LEG101-EN-1770, CON-LEG101-EN-3440 | 100% |  |
| CON-LEG101-LR-2900 |  | Granular bedding for Sanitary Sewerage Network [Local – 02 ] | 4d | 2026-02-19 A | 2026-05-20 A | CON-LEG101-LR-2810 | 100% |  |
| CON-LEG101-LR-2990 |  | Installation of Pipe for Sanitary Sewerage Network [Local – 02 ] | 10d | 2026-02-21 A | 2026-05-21 A | CON-LEG101-PR-2560, CON-LEG101-LR-2900, CON-LEG101-PR-1720 | 100% |  |
| CON-LEG101-LR-3260 |  | Granular Surround for Sanitary Sewerage Network [Local – 02 ] | 4d | 2026-02-22 A | 2026-05-23 A | CON-LEG101-LR-3170, CON-LEG101-EN-3450 | 100% |  |
| CON-LEG101-LR-3080 |  | Testing for Sanitary Sewerage Network [Local – 02 ] | 4d | 2026-05-31 A | 2026-05-31 A | CON-LEG101-LR-2990 | 100% |  |
| CON-LEG101-LR-3170 |  | Concrete encasement, pipe dia 200 and 350 mm [Local – 02 ] | 3d | 2026-06-01 A | 2026-06-02 A | CON-LEG101-LR-3080, CON-LEG101-EN-3450, CON-LEG101-PR-1430 | 100% |  |
| CON-LEG101-LR-3350 |  | Installation of Micron Marker Magnetic Tape [Local – 02 ] | 2d | 2026-06-03 A | 2026-06-04 A | CON-LEG101-LR-3260 | 100% |  |
| CON-LEG101-LR-3440 |  | Backfilling to Subgrade Elevation [Local – 02 ] | 6d | 2026-06-06 A | 2026-06-08 A | CON-LEG101-LR-3350, CON-LEG101-EN-3440 | 100% |  |
|  | 1 | **Manhole** |  | 2026-02-12 | 2026-11-29 |  |  |  |
| CON-LEG101-LR-3530 |  | Installation of Fiberglass Manholes [Local – 02 ] | 20d | 2026-02-12 A | 2026-11-29 | CON-LEG101-PR-2570, CON-LEG101-LR-2990, CON-LEG101-PR-1750 | 95% | -30.74d |
|  | 3 | **Local – 03** |  | 2026-02-14 | 2026-12-02 |  |  |  |
|  | 1 | **Stormwater Utilities** |  | 2026-02-14 | 2026-12-02 |  |  |  |
|  | 2 | **Pipe Work** |  | 2026-02-14 | 2026-05-24 |  |  |  |
| CON-LEG101-LR-3620 |  | Excavation for Stormwater Utilities Network [Local – 03 ] | 10d | 2026-02-14 A | 2026-04-30 A | CON-LEG101-LR-3610, CON-LEG101-SD-1000, CON-LEG101-LR-1740, CON-LEG101-EN-1780, CON-LEG101-EN-1790, CON-LEG101-EN-1800, CON-LEG101-EN-3440 | 100% |  |
| CON-LEG101-LR-3720 |  | Granular bedding for Stormwater Utilities Network [Local – 03 ] | 3d | 2026-05-02 A | 2026-05-04 A | CON-LEG101-LR-3620 | 100% |  |
| CON-LEG101-LR-3820 |  | Installation of Pipe for Stormwater Utilities Network [Local – 03 ] | 8d | 2026-05-05 A | 2026-05-09 A | CON-LEG101-PR-2100, CON-LEG101-PR-2110, CON-LEG101-LR-3720, CON-LEG101-PR-1780, CON-LEG101-PR-1810 | 100% |  |
| CON-LEG101-LR-3920 |  | Testing for Stormwater Utilities Network [Local – 03 ] | 3d | 2026-05-19 A | 2026-05-19 A | CON-LEG101-LR-3820 | 100% |  |
| CON-LEG101-LR-4020 |  | Granular Surround for Stormwater Utilities Network [Local – 03 ] | 3d | 2026-05-20 A | 2026-05-20 A | CON-LEG101-LR-3920, CON-LEG101-EN-3450 | 100% |  |
| CON-LEG101-LR-4130 |  | Installation of Micron Marker Magnetic Tape [Local – 03 ] | 2d | 2026-05-21 A | 2026-05-21 A | CON-LEG101-LR-4020 | 100% |  |
| CON-LEG101-LR-4240 |  | Backfilling to Subgrade Elevation [Local – 03 ] | 6d | 2026-05-23 A | 2026-05-24 A | CON-LEG101-LR-4130, CON-LEG101-EN-3440 | 100% |  |
|  | 1 | **Manhole** |  | 2026-02-14 | 2026-12-01 |  |  |  |
| CON-LEG101-LR-11240 |  | Excavation of Inlet Manholes [Local – 03 ] | 6d | 2026-02-14 A | 2026-04-30 A | CON-LEG101-LR-3620 | 100% |  |
| CON-LEG101-LR-11250 |  | PC of Inlet Manholes [Local – 03 ] | 3d | 2026-05-02 A | 2026-05-04 A | CON-LEG101-LR-11240 | 100% |  |
| CON-LEG101-LR-11260 |  | Installation of Inlet Manholes [Local – 03 ] | 14d | 2026-05-05 A | 2026-06-01 A | CON-LEG101-LR-11250 | 100% |  |
| CON-LEG101-LR-11270 |  | Backfilling of Inlet Manholes [Local – 03 ] | 6d | 2026-06-03 A | 2026-06-04 A | CON-LEG101-LR-11260 | 100% |  |
| CON-LEG101-LR-11280 |  | Finishing and Testing of Inlet Manholes [Local – 03 ] | 20d | 2026-10-14 A | 2026-12-01 | CON-LEG101-LR-11270, CON-LEG101-LR-11260, CON-LEG101-LR-11180, CON-LEG101-LR-11220 | 90% | 110.4d |
|  | 3 | **Concrete Chambers/Outfalls** |  | 2026-06-15 | 2026-12-02 |  |  |  |
| CON-LEG101-LR-11290 |  | Excavation of Concrete chambers [Local – 03 ] | 12d | 2026-06-15 A | 2026-06-24 A | CON-LEG101-LR-11260 | 100% |  |
| CON-LEG101-LR-11300 |  | PC of Concrete chambers [Local – 03 ] | 5d | 2026-06-16 A | 2026-06-25 A | CON-LEG101-LR-11290 | 100% |  |
| CON-LEG101-LR-11310 |  | Installation of Concrete chambers [Local – 03 ] | 20d | 2026-06-17 A | 2026-06-25 A | CON-LEG101-LR-11300 | 100% |  |
| CON-LEG101-LR-11320 |  | Installation UPVC Pipes to Concrete chambers [Local – 03 ] | 10d | 2026-06-18 A | 2026-06-27 A | CON-LEG101-LR-11290, CON-LEG101-LR-11310 | 100% |  |
| CON-LEG101-LR-11330 |  | Backfilling to Concrete chambers [Local – 03 ] | 6d | 2026-06-20 A | 2026-06-30 A | CON-LEG101-LR-11320, CON-LEG101-LR-11310 | 100% |  |
| CON-LEG101-LR-11340 |  | FInishing and Testing of Concrete chambers [Local – 03 ] | 11d | 2026-10-14 A | 2026-12-02 | CON-LEG101-LR-11320, CON-LEG101-LR-11330, CON-LEG101-LR-11230 | 90% | 112.6d |
|  | 4 | **Local – 04** |  | 2026-01-28 | 2027-02-07 |  |  |  |
|  | 1 | **Stormwater Utilities** |  | 2026-01-28 | 2027-02-07 |  |  |  |
|  | 2 | **Pipe Work** |  | 2026-01-28 | 2027-01-05 |  |  |  |
| CON-LEG101-LR-3630 |  | Excavation for Stormwater Utilities Network [Local – 04 ] | 7d | 2026-01-28 A | 2026-01-29 A | CON-LEG101-LR-1340, CON-LEG101-SD-1000, CON-LEG101-LR-1800, CON-LEG101-EN-1780, CON-LEG101-EN-1790, CON-LEG101-EN-1800, CON-LEG101-EN-3440 | 100% |  |
| CON-LEG101-LR-3730 |  | Granular bedding for Stormwater Utilities Network [Local – 04 ] | 4d | 2026-01-31 A | 2026-01-31 A | CON-LEG101-LR-3630 | 100% |  |
| CON-LEG101-LR-3830 |  | Installation of Pipe for Stormwater Utilities Network [Local – 04 ] | 8d | 2026-02-01 A | 2026-02-02 A | CON-LEG101-PR-2100, CON-LEG101-PR-2110, CON-LEG101-LR-3730, CON-LEG101-PR-1780, CON-LEG101-PR-1810 | 100% |  |
| CON-LEG101-LR-4030 |  | Granular Surround for Stormwater Utilities Network [Local – 04 ] | 8d | 2026-02-01 A | 2026-02-02 A | CON-LEG101-LR-3930, CON-LEG101-EN-3450 | 100% |  |
| CON-LEG101-LR-3930 |  | Testing for Stormwater Utilities Network [Local – 04 ] | 12d | 2026-12-16 | 2026-12-29 | CON-LEG101-LR-3830 |  | -44.74d |
| CON-LEG101-LR-4140 |  | Installation of Micron Marker Magnetic Tape [Local – 04 ] | 2d | 2026-12-30 | 2026-12-31 | CON-LEG101-LR-4030, CON-LEG101-LR-11330 |  | -44.74d |
| CON-LEG101-LR-4250 |  | Backfilling to Subgrade Elevation [Local – 04 ] | 4d | 2027-01-02 | 2027-01-05 | CON-LEG101-LR-4140, CON-LEG101-EN-3440 |  | -44.74d |
|  | 1 | **Manhole** |  | 2026-01-28 | 2027-01-13 |  |  |  |
| CON-LEG101-LR-11350 |  | Excavation of Inlet Manholes [Local – 04 ] | 10d | 2026-01-28 A | 2026-01-29 A | CON-LEG101-LR-3630 | 100% |  |
| CON-LEG101-LR-11360 |  | PC of Inlet Manholes [Local – 04 ] | 3d | 2026-03-01 A | 2026-03-01 A | CON-LEG101-LR-11350 | 100% |  |
| CON-LEG101-LR-4370 |  | Installation of Inlet Manholes [Local – 04 ] | 10d | 2026-03-07 A | 2026-12-20 | CON-LEG101-LR-11360, CON-LEG101-LR-3830, CON-LEG101-PR-1980 | 60% | -36.74d |
| CON-LEG101-LR-11380 |  | Backfilling of Inlet Manholes [Local – 04 ] | 6d | 2026-12-21 | 2026-12-27 | CON-LEG101-LR-4370 |  | -36.74d |

| ID | WBS | Task | Duration | Start | Finish | Predecessors | Complete | Total float |
| --- | --- | --- | --- | --- | --- | --- | --- | --- |
| CON-LEG101-LR-11390 |  | Finishing and Testing of Inlet Manholes [Local – 04 ] | 15d | 2026-12-28 | 2027-01-13 | CON-LEG101-LR-11380, CON-LEG101-LR-4370, CON-LEG101-LR-11280 |  | 88.2d |
|  | 3 | **Concrete Chambers/Outfalls** |  | 2026-12-21 | 2027-02-07 |  |  |  |
| CON-LEG101-LR-11400 |  | Excavation of Concrete chambers [Local – 04 ] | 6d | 2026-12-21 | 2026-12-27 | CON-LEG101-LR-4370 |  | 39.5d |
| CON-LEG101-LR-11410 |  | PC of Concrete chambers [Local – 04 ] | 2d | 2026-12-28 | 2026-12-29 | CON-LEG101-LR-11400 |  | 39.5d |
| CON-LEG101-LR-4470 |  | Installation of Concrete chambers [Local – 04 ] | 10d | 2026-12-30 | 2027-01-10 | CON-LEG101-LR-11410, CON-LEG101-LR-4370, CON-LEG101-LR-3830, CON-LEG101-PR-1990, CON-LEG101-LR-11380 |  | 39.5d |
| CON-LEG101-LR-11420 |  | Installation UPVC Pipes to Concrete chambers [Local – 04 ] | 6d | 2027-01-11 | 2027-01-17 | CON-LEG101-LR-11400, CON-LEG101-LR-4470 |  | 39.5d |
| CON-LEG101-LR-11430 |  | Backfilling to Concrete chambers [Local – 04 ] | 6d | 2027-01-18 | 2027-01-24 | CON-LEG101-LR-11420, CON-LEG101-LR-4470 |  | 39.5d |
| CON-LEG101-LR-11440 |  | FInishing and Testing of Concrete chambers [Local – 04 ] | 12d | 2027-01-25 | 2027-02-07 | CON-LEG101-LR-11420, CON-LEG101-LR-11430, CON-LEG101-LR-11340 |  | 67.15d |
|  | 4 | **Sanitary Sewerage** |  | 2026-01-28 | 2026-12-28 |  |  |  |
|  | 2 | **Pipe Work** |  | 2026-01-28 | 2026-12-28 |  |  |  |
| CON-LEG101-LR-2820 |  | Excavation for Sanitary Sewerage Network [Local – 04 ] | 10d | 2026-01-28 A | 2026-01-29 A | CON-LEG101-LR-3630, CON-LEG101-EN-1750, CON-LEG101-EN-1760, CON-LEG101-EN-1770, CON-LEG101-EN-3440 | 100% |  |
| CON-LEG101-LR-2910 |  | Granular bedding for Sanitary Sewerage Network [Local – 04 ] | 2d | 2026-01-30 A | 2026-01-31 A | CON-LEG101-LR-2820 | 100% |  |
| CON-LEG101-LR-3000 |  | Installation of Pipe for Sanitary Sewerage Network [Local – 04 ] | 12d | 2026-02-01 A | 2026-02-02 A | CON-LEG101-PR-2560, CON-LEG101-LR-2910, CON-LEG101-PR-1720 | 100% |  |
| CON-LEG101-LR-3270 |  | Granular Surround for Sanitary Sewerage Network [Local – 04 ] | 2d | 2026-02-01 A | 2026-02-02 A | CON-LEG101-LR-3180, CON-LEG101-EN-3450 | 100% |  |
| CON-LEG101-LR-3090 |  | Testing for Sanitary Sewerage Network [Local – 04 ] | 3d | 2026-02-26 A | 2026-03-02 A | CON-LEG101-LR-3000 | 100% |  |
| CON-LEG101-LR-3180 |  | Concrete encasement, pipe dia 200 and 350 mm [Local – 04 ] | 3d | 2026-12-16 | 2026-12-19 | CON-LEG101-LR-3090, CON-LEG101-EN-3450, CON-LEG101-PR-1430 |  | -37.74d |
| CON-LEG101-LR-3360 |  | Installation of Micron Marker Magnetic Tape [Local – 04 ] | 2d | 2026-12-20 | 2026-12-21 | CON-LEG101-LR-3270 |  | -37.74d |
| CON-LEG101-LR-3450 |  | Backfilling to Subgrade Elevation [Local – 04 ] | 6d | 2026-12-22 | 2026-12-28 | CON-LEG101-LR-3360, CON-LEG101-EN-3440 |  | -37.74d |
|  | 1 | **Manhole** |  | 2026-01-28 | 2026-12-19 |  |  |  |
| CON-LEG101-LR-3540 |  | Installation of Fiberglass Manholes [Local – 04 ] | 10d | 2026-01-28 A | 2026-12-19 | CON-LEG101-PR-2570, CON-LEG101-LR-3000, CON-LEG101-PR-1750 | 75% | -29.74d |
|  | 5 | **Local – 05** |  | 2026-01-20 | 2026-12-16 |  |  |  |
|  | 1 | **Stormwater Utilities** |  | 2026-01-21 | 2026-08-24 |  |  |  |
|  | 2 | **Pipe Work** |  | 2026-01-21 | 2026-04-30 |  |  |  |
| CON-LEG101-LR-3640 |  | Excavation for Stormwater Utilities Network [Local – 05 ] | 10d | 2026-01-21 A | 2026-04-23 A | CON-LEG101-LR-3630, CON-LEG101-SD-1000, CON-LEG101-LR-1900, CON-LEG101-EN-1780, CON-LEG101-EN-1790, CON-LEG101-EN-1800, CON-LEG101-EN-3440 | 100% |  |
| CON-LEG101-LR-3740 |  | Granular bedding for Stormwater Utilities Network [Local – 05 ] | 4d | 2026-01-22 A | 2026-04-25 A | CON-LEG101-LR-3640 | 100% |  |
| CON-LEG101-LR-3840 |  | Installation of Pipe for Stormwater Utilities Network [Local – 05 ] | 8d | 2026-01-24 A | 2026-04-26 A | CON-LEG101-PR-2100, CON-LEG101-PR-2110, CON-LEG101-LR-3740, CON-LEG101-PR-1780, CON-LEG101-PR-1810 | 100% |  |
| CON-LEG101-LR-4040 |  | Granular Surround for Stormwater Utilities Network [Local – 05 ] | 6d | 2026-01-25 A | 2026-04-28 A | CON-LEG101-LR-3940, CON-LEG101-EN-3450 | 100% |  |
| CON-LEG101-LR-3940 |  | Testing for Stormwater Utilities Network [Local – 05 ] | 6d | 2026-03-11 A | 2026-04-28 A | CON-LEG101-LR-3840 | 100% |  |
| CON-LEG101-LR-4150 |  | Installation of Micron Marker Magnetic Tape [Local – 05 ] | 2d | 2026-03-14 A | 2026-04-29 A | CON-LEG101-LR-4040 | 100% |  |
| CON-LEG101-LR-4260 |  | Backfilling to Subgrade Elevation [Local – 05 ] | 8d | 2026-03-16 A | 2026-04-30 A | CON-LEG101-LR-4150, CON-LEG101-EN-3440 | 100% |  |
|  | 1 | **Manhole** |  | 2026-01-21 | 2026-08-24 |  |  |  |
| CON-LEG101-LR-11450 |  | Excavation of Inlet Manholes [Local – 05 ] | 10d | 2026-01-21 A | 2026-04-26 A | CON-LEG101-LR-3640 | 100% |  |
| CON-LEG101-LR-11460 |  | PC of Inlet Manholes [Local – 05 ] | 3d | 2026-02-04 A | 2026-04-27 A | CON-LEG101-LR-11450 | 100% |  |
| CON-LEG101-LR-4380 |  | Installation of Inlet Manholes [Local – 05 ] | 10d | 2026-02-11 A | 2026-04-30 A | CON-LEG101-LR-11460, CON-LEG101-LR-3840, CON-LEG101-PR-1980 | 100% |  |
| CON-LEG101-LR-11470 |  | Backfilling of Inlet Manholes [Local – 05 ] | 8d | 2026-04-15 A | 2026-05-07 A | CON-LEG101-LR-4380 | 100% |  |
| CON-LEG101-LR-11480 |  | Finishing and Testing of Inlet Manholes [Local – 05 ] | 11d | 2026-07-04 A | 2026-08-24 A | CON-LEG101-LR-11470, CON-LEG101-LR-4380, CON-LEG101-LR-11390 | 100% |  |
|  | 3 | **Concrete Chambers/Outfalls** |  | 2026-05-02 | 2026-08-23 |  |  |  |
| CON-LEG101-LR-11490 |  | Excavation of Concrete chambers [Local – 05 ] | 6d | 2026-05-02 A | 2026-05-10 A | CON-LEG101-LR-4380 | 100% |  |
| CON-LEG101-LR-11500 |  | PC of Concrete chambers [Local – 05 ] | 2d | 2026-05-03 A | 2026-05-11 A | CON-LEG101-LR-11490 | 100% |  |
| CON-LEG101-LR-11510 |  | Installation UPVC Pipes to Concrete chambers [Local – 05 ] | 4d | 2026-05-04 A | 2026-05-14 A | CON-LEG101-LR-11490, CON-LEG101-LR-4480 | 100% |  |
| CON-LEG101-LR-4480 |  | Installation of Concrete chambers [Local – 05 ] | 10d | 2026-05-04 A | 2026-05-13 A | CON-LEG101-LR-11500, CON-LEG101-LR-4380, CON-LEG101-LR-3840, CON-LEG101-PR-1990 | 100% |  |
| CON-LEG101-LR-11520 |  | Backfilling to Concrete chambers [Local – 05 ] | 4d | 2026-05-07 A | 2026-05-16 A | CON-LEG101-LR-11510, CON-LEG101-LR-4480 | 100% |  |
| CON-LEG101-LR-11530 |  | FInishing and Testing of Concrete chambers [Local – 05 ] | 14d | 2026-07-04 A | 2026-08-23 A | CON-LEG101-LR-11510, CON-LEG101-LR-11520, CON-LEG101-LR-11440 | 100% |  |
|  | 4 | **Sanitary Sewerage** |  | 2026-01-20 | 2026-12-16 |  |  |  |
|  | 2 | **Pipe Work** |  | 2026-01-20 | 2026-05-07 |  |  |  |
| CON-LEG101-LR-2830 |  | Excavation for Sanitary Sewerage Network [Local – 05 ] | 8d | 2026-01-20 A | 2026-02-09 A | CON-LEG101-LR-3640, CON-LEG101-EN-1750, CON-LEG101-EN-1760, CON-LEG101-EN-1770, CON-LEG101-EN-3440 | 100% |  |
| CON-LEG101-LR-2920 |  | Granular bedding for Sanitary Sewerage Network [Local – 05 ] | 4d | 2026-01-21 A | 2026-04-21 A | CON-LEG101-LR-2830 | 100% |  |
| CON-LEG101-LR-3010 |  | Installation of Pipe for Sanitary Sewerage Network [Local – 05 ] | 8d | 2026-01-22 A | 2026-04-23 A | CON-LEG101-PR-2560, CON-LEG101-LR-2920, CON-LEG101-PR-1720 | 100% |  |
| CON-LEG101-LR-3280 |  | Granular Surround for Sanitary Sewerage Network [Local – 05 ] | 2d | 2026-01-24 A | 2026-05-05 A | CON-LEG101-LR-3200, CON-LEG101-EN-3450 | 100% |  |
| CON-LEG101-LR-3200 |  | Concrete encasement, pipe dia 200 and 350 mm [Local – 05 ] | 4d | 2026-02-10 A | 2026-02-10 A | CON-LEG101-LR-3100, CON-LEG101-EN-3450, CON-LEG101-PR-1430 | 100% |  |
| CON-LEG101-LR-3100 |  | Testing for Sanitary Sewerage Network [Local – 05 ] | 4d | 2026-03-01 A | 2026-05-03 A | CON-LEG101-LR-3010 | 100% |  |
| CON-LEG101-LR-3370 |  | Installation of Micron Marker Magnetic Tape [Local – 05 ] | 2d | 2026-03-11 A | 2026-05-06 A | CON-LEG101-LR-3280 | 100% |  |
| CON-LEG101-LR-3460 |  | Backfilling to Subgrade Elevation [Local – 05 ] | 4d | 2026-03-14 A | 2026-05-07 A | CON-LEG101-LR-3370, CON-LEG101-EN-3440 | 100% |  |
|  | 1 | **Manhole** |  | 2026-01-20 | 2026-12-16 |  |  |  |
| CON-LEG101-LR-3550 |  | Installation of Fiberglass Manholes [Local – 05 ] | 18d | 2026-01-20 A | 2026-12-16 | CON-LEG101-PR-2570, CON-LEG101-LR-3010, CON-LEG101-PR-1750 | 95% | 69.6d |
|  | 6 | **Local – 06** |  | 2026-02-11 | 2026-08-23 |  |  |  |
|  | 1 | **Stormwater Utilities** |  | 2026-02-17 | 2026-08-23 |  |  |  |
|  | 2 | **Pipe Work** |  | 2026-02-17 | 2026-05-16 |  |  |  |
| CON-LEG101-LR-3650 |  | Excavation for Stormwater Utilities Network [Local – 06 ] | 10d | 2026-02-17 A | 2026-03-28 A | CON-LEG101-LR-3640 SS, CON-LEG101-SD-1000, CON-LEG101-LR-1990, CON-LEG101-EN-1780, CON-LEG101-EN-1790, CON-LEG101-EN-1800, CON-LEG101-EN-3440 | 100% |  |
| CON-LEG101-LR-3750 |  | Granular bedding for Stormwater Utilities Network [Local – 06 ] | 4d | 2026-02-18 A | 2026-04-27 A | CON-LEG101-LR-3650 | 100% |  |
| CON-LEG101-LR-3850 |  | Installation of Pipe for Stormwater Utilities Network [Local – 06 ] | 10d | 2026-02-19 A | 2026-04-29 A | CON-LEG101-PR-2110, CON-LEG101-LR-3750, CON-LEG101-PR-1780 | 100% |  |
| CON-LEG101-LR-4050 |  | Granular Surround for Stormwater Utilities Network [Local – 06 ] | 8d | 2026-02-19 A | 2026-05-12 A | CON-LEG101-LR-3950, CON-LEG101-EN-3450 | 100% |  |
| CON-LEG101-LR-3950 |  | Testing for Stormwater Utilities Network [Local – 06 ] | 8d | 2026-04-11 A | 2026-05-11 A | CON-LEG101-LR-3850 | 100% |  |
| CON-LEG101-LR-4160 |  | Installation of Micron Marker Magnetic Tape [Local – 06 ] | 2d | 2026-04-20 A | 2026-05-13 A | CON-LEG101-LR-4050 | 100% |  |
| CON-LEG101-LR-4280 |  | Backfilling to Subgrade Elevation [Local – 06 ] | 7d | 2026-04-22 A | 2026-05-16 A | CON-LEG101-LR-4160, CON-LEG101-EN-3440 | 100% |  |
|  | 1 | **Manhole** |  | 2026-02-17 | 2026-08-22 |  |  |  |
| CON-LEG101-LR-11540 |  | Excavation of Inlet Manholes [Local – 06 ] | 10d | 2026-02-17 A | 2026-03-28 A | CON-LEG101-LR-3650 | 100% |  |
| CON-LEG101-LR-11550 |  | PC of Inlet Manholes [Local – 06 ] | 5d | 2026-03-29 A | 2026-03-30 A | CON-LEG101-LR-11540 | 100% |  |
| CON-LEG101-LR-4390 |  | Installation of Inlet Manholes [Local – 06 ] | 10d | 2026-04-01 A | 2026-06-03 A | CON-LEG101-LR-11550, CON-LEG101-LR-3850, CON-LEG101-PR-1980 | 100% |  |
| CON-LEG101-LR-11560 |  | Backfilling of Inlet Manholes [Local – 06 ] | 8d | 2026-04-22 A | 2026-06-06 A | CON-LEG101-LR-4390 | 100% |  |

| ID | WBS | Task | Duration | Start | Finish | Predecessors | Complete |
| --- | --- | --- | --- | --- | --- | --- | --- |
| CON-LEG101-LR-11570 |  | Finishing and Testing of Inlet Manholes [Local – 06 ] | 10d | 2026-08-01 A | 2026-08-22 A | CON-LEG101-LR-11560, CON-LEG101-LR-4390, CON-LEG101-LR-11480 | 100% |
|  | 3 | **Concrete Chambers/Outfalls** |  | 2026-05-09 | 2026-08-23 |  |  |
| CON-LEG101-LR-11580 |  | Excavation of Concrete chambers [Local – 06 ] | 6d | 2026-05-09 A | 2026-05-10 A | CON-LEG101-LR-4390 | 100% |
| CON-LEG101-LR-11590 |  | PC of Concrete chambers [Local – 06 ] | 2d | 2026-05-11 A | 2026-05-11 A | CON-LEG101-LR-11580 | 100% |
| CON-LEG101-LR-4490 |  | Installation of Concrete chambers [Local – 06 ] | 6d | 2026-05-12 A | 2026-05-14 A | CON-LEG101-LR-11590, CON-LEG101-LR-3850, CON-LEG101-LR-4390, CON-LEG101-PR-1990 | 100% |
| CON-LEG101-LR-11600 |  | Installation UPVC Pipes to Concrete chambers [Local – 06 ] | 4d | 2026-05-13 A | 2026-05-16 A | CON-LEG101-LR-11580, CON-LEG101-LR-4490 | 100% |
| CON-LEG101-LR-11610 |  | Backfilling to Concrete chambers [Local – 06 ] | 3d | 2026-05-17 A | 2026-05-21 A | CON-LEG101-LR-11600, CON-LEG101-LR-4490 | 100% |
| CON-LEG101-LR-11620 |  | FInishing and Testing of Concrete chambers [Local – 06 ] | 12d | 2026-08-02 A | 2026-08-23 A | CON-LEG101-LR-11600, CON-LEG101-LR-11610, CON-LEG101-LR-4490, CON-LEG101-LR-11530 | 100% |
|  | 4 | **Sanitary Sewerage** |  | 2026-02-11 | 2026-08-23 |  |  |
|  | 2 | **Pipe Work** |  | 2026-02-11 | 2026-03-29 |  |  |
| CON-LEG101-LR-2840 |  | Excavation for Sanitary Sewerage Network [Local – 06 ] | 6d | 2026-02-11 A | 2026-02-21 A | CON-LEG101-LR-3650, CON-LEG101-EN-1750, CON-LEG101-EN-1760, CON-LEG101-EN-1770, CON-LEG101-EN-3440 | 100% |
| CON-LEG101-LR-2930 |  | Granular bedding for Sanitary Sewerage Network [Local – 06 ] | 4d | 2026-02-12 A | 2026-03-04 A | CON-LEG101-LR-2840 | 100% |
| CON-LEG101-LR-3020 |  | Installation of Pipe for Sanitary Sewerage Network [Local – 06 ] | 8d | 2026-02-14 A | 2026-03-12 A | CON-LEG101-PR-2560, CON-LEG101-LR-2930, CON-LEG101-PR-1720 | 100% |
| CON-LEG101-LR-3300 |  | Granular Surround for Sanitary Sewerage Network [Local – 06 ] | 4d | 2026-02-15 A | 2026-03-14 A | CON-LEG101-LR-3210, CON-LEG101-EN-3450 | 100% |
| CON-LEG101-LR-3110 |  | Testing for Sanitary Sewerage Network [Local – 06 ] | 4d | 2026-03-14 A | 2026-03-15 A | CON-LEG101-LR-3020 | 100% |
| CON-LEG101-LR-3390 |  | Installation of Micron Marker Magnetic Tape [Local – 06 ] | 2d | 2026-03-17 A | 2026-03-26 A | CON-LEG101-LR-3300 | 100% |
| CON-LEG101-LR-3210 |  | Concrete encasement, pipe dia 200 and 350 mm [Local – 06 ] | 4d | 2026-03-25 A | 2026-03-25 A | CON-LEG101-LR-3110, CON-LEG101-EN-3450, CON-LEG101-PR-1430 | 100% |
| CON-LEG101-LR-3480 |  | Backfilling to Subgrade Elevation [Local – 06 ] | 4d | 2026-03-28 A | 2026-03-29 A | CON-LEG101-LR-3390, CON-LEG101-EN-3440 | 100% |
|  | 1 | **Manhole** |  | 2026-02-11 | 2026-08-23 |  |  |
| CON-LEG101-LR-3560 |  | Installation of Fiberglass Manholes [Local – 06 ] | 21d | 2026-02-11 A | 2026-08-23 A | CON-LEG101-PR-2570, CON-LEG101-LR-3020, CON-LEG101-PR-1750 | 100% |
|  | 7 | **Local – 07** |  | 2026-02-18 | 2026-08-23 |  |  |
|  | 1 | **Stormwater Utilities** |  | 2026-02-18 | 2026-08-23 |  |  |
|  | 2 | **Pipe Work** |  | 2026-02-18 | 2026-04-09 |  |  |
| CON-LEG101-LR-3660 |  | Excavation for Stormwater Utilities Network [Local – 07 ] | 3d | 2026-02-18 A | 2026-02-21 A | CON-LEG101-SD-1000, CON-LEG101-LR-4230, CON-LEG101-LR-2080, CON-LEG101-EN-1780, CON-LEG101-EN-1790, CON-LEG101-EN-1800, CON-LEG101-EN-3440 | 100% |
| CON-LEG101-LR-3760 |  | Granular bedding for Stormwater Utilities Network [Local – 07 ] | 2d | 2026-02-22 A | 2026-02-22 A | CON-LEG101-LR-3660 | 100% |
| CON-LEG101-LR-3860 |  | Installation of Pipe for Stormwater Utilities Network [Local – 07 ] | 2d | 2026-02-22 A | 2026-02-23 A | CON-LEG101-PR-2110, CON-LEG101-LR-3760, CON-LEG101-PR-1780 | 100% |
| CON-LEG101-LR-4060 |  | Granular Surround for Stormwater Utilities Network [Local – 07 ] | 2d | 2026-02-24 A | 2026-02-24 A | CON-LEG101-LR-3960, CON-LEG101-EN-3450 | 100% |
| CON-LEG101-LR-3960 |  | Testing for Stormwater Utilities Network [Local – 07 ] | 2d | 2026-03-15 A | 2026-03-16 A | CON-LEG101-LR-3860 | 100% |
| CON-LEG101-LR-4180 |  | Installation of Micron Marker Magnetic Tape [Local – 07 ] | 3d | 2026-04-05 A | 2026-04-06 A | CON-LEG101-LR-4060 | 100% |
| CON-LEG101-LR-4290 |  | Backfilling to Subgrade Elevation [Local – 07 ] | 2d | 2026-04-08 A | 2026-04-09 A | CON-LEG101-LR-4180, CON-LEG101-EN-3440 | 100% |
|  | 1 | **Manhole** |  | 2026-02-18 | 2026-08-23 |  |  |
| CON-LEG101-LR-11630 |  | Excavation of Inlet Manholes [Local – 07 ] | 3d | 2026-02-18 A | 2026-02-21 A | CON-LEG101-LR-3660, CON-LEG101-LR-4290 | 100% |
| CON-LEG101-LR-11640 |  | PC of Inlet Manholes [Local – 07 ] | 2d | 2026-02-22 A | 2026-02-22 A | CON-LEG101-LR-11630 | 100% |
| CON-LEG101-LR-4400 |  | Installation of Inlet Manholes [Local – 07 ] | 8d | 2026-03-10 A | 2026-04-25 A | CON-LEG101-LR-11640, CON-LEG101-LR-3860, CON-LEG101-PR-1980 | 100% |
| CON-LEG101-LR-11650 |  | Backfilling of Inlet Manholes [Local – 07 ] | 8d | 2026-04-26 A | 2026-04-29 A | CON-LEG101-LR-4400 | 100% |
| CON-LEG101-LR-11660 |  | Finishing and Testing of Inlet Manholes [Local – 07 ] | 8d | 2026-08-05 A | 2026-08-23 A | CON-LEG101-LR-11650, CON-LEG101-LR-4400, CON-LEG101-LR-11570 | 100% |
|  | 3 | **Concrete Chambers/Outfalls** |  | 2026-04-25 | 2026-08-23 |  |  |
| CON-LEG101-LR-11670 |  | Excavation of Concrete chambers [Local – 07 ] | 3d | 2026-04-25 A | 2026-04-26 A | CON-LEG101-LR-4400 | 100% |
| CON-LEG101-LR-11680 |  | PC of Concrete chambers [Local – 07 ] | 2d | 2026-04-27 A | 2026-04-28 A | CON-LEG101-LR-11670 | 100% |
| CON-LEG101-LR-11690 |  | Installation UPVC Pipes to Concrete chambers [Local – 07 ] | 4d | 2026-04-29 A | 2026-04-30 A | CON-LEG101-LR-11670, CON-LEG101-LR-4500 | 100% |
| CON-LEG101-LR-4500 |  | Installation of Concrete chambers [Local – 07 ] | 6d | 2026-04-29 A | 2026-04-30 A | CON-LEG101-LR-11680, CON-LEG101-LR-3860, CON-LEG101-PR-1990 | 100% |
| CON-LEG101-LR-11700 |  | Backfilling to Concrete chambers [Local – 07 ] | 3d | 2026-05-02 A | 2026-05-04 A | CON-LEG101-LR-11690, CON-LEG101-LR-4500 | 100% |
| CON-LEG101-LR-11710 |  | FInishing and Testing of Concrete chambers [Local – 07 ] | 6d | 2026-08-06 A | 2026-08-23 A | CON-LEG101-LR-11690, CON-LEG101-LR-11700, CON-LEG101-LR-4500, CON-LEG101-LR-11620 | 100% |
|  | 4 | **Sanitary Sewerage** |  | 2026-05-02 | 2026-08-23 |  |  |
|  | 2 | **Pipe Work** |  | 2026-05-02 | 2026-06-08 |  |  |
| CON-LEG101-LR-2850 |  | Excavation for Sanitary Sewerage Network [Local – 07 ] | 3d | 2026-05-02 A | 2026-05-03 A | CON-LEG101-LR-3660, CON-LEG101-EN-1750, CON-LEG101-EN-1760, CON-LEG101-EN-1770, CON-LEG101-EN-3440, CON-LEG101-LR-11640 | 100% |
| CON-LEG101-LR-2940 |  | Granular bedding for Sanitary Sewerage Network [Local – 07 ] | 2d | 2026-05-04 A | 2026-05-05 A | CON-LEG101-LR-2850 | 100% |
| CON-LEG101-LR-3030 |  | Installation of Pipe for Sanitary Sewerage Network [Local – 07 ] | 4d | 2026-05-06 A | 2026-05-09 A | CON-LEG101-PR-2560, CON-LEG101-LR-2940, CON-LEG101-PR-1720 | 100% |
| CON-LEG101-LR-3120 |  | Testing for Sanitary Sewerage Network [Local – 07 ] | 2d | 2026-05-23 A | 2026-05-24 A | CON-LEG101-LR-3030 | 100% |
| CON-LEG101-LR-3220 |  | Concrete encasement, pipe dia 200 and 350 mm [Local – 07 ] | 2d | 2026-06-01 A | 2026-06-02 A | CON-LEG101-LR-3120, CON-LEG101-EN-3450, CON-LEG101-PR-1430 | 100% |
| CON-LEG101-LR-3310 |  | Granular Surround for Sanitary Sewerage Network [Local – 07 ] | 2d | 2026-06-03 A | 2026-06-03 A | CON-LEG101-LR-3220, CON-LEG101-EN-3450 | 100% |
| CON-LEG101-LR-3400 |  | Installation of Micron Marker Magnetic Tape [Local – 07 ] | 1d | 2026-06-04 A | 2026-06-04 A | CON-LEG101-LR-3310 | 100% |
| CON-LEG101-LR-3490 |  | Backfilling to Subgrade Elevation [Local – 07 ] | 2d | 2026-06-06 A | 2026-06-08 A | CON-LEG101-LR-3400, CON-LEG101-EN-3440 | 100% |
|  | 1 | **Manhole** |  | 2026-05-02 | 2026-08-23 |  |  |
| CON-LEG101-LR-3570 |  | Installation of Fiberglass Manholes [Local – 07 ] | 12d | 2026-05-02 A | 2026-08-23 A | CON-LEG101-PR-2570, CON-LEG101-LR-3030, CON-LEG101-PR-1750 | 100% |
|  | 8 | **Local – 08** |  | 2026-01-17 | 2027-02-08 |  |  |
|  | 1 | **Stormwater Utilities** |  | 2026-01-17 | 2027-02-08 |  |  |
|  | 2 | **Pipe Work** |  | 2026-01-17 | 2026-03-07 |  |  |
| CON-LEG101-LR-3670 |  | Excavation for Stormwater Utilities Network [Local – 08 ] | 10d | 2026-01-17 A | 2026-01-21 A | CON-LEG101-LR-3610, CON-LEG101-SD-1000, CON-LEG101-LR-2180, CON-LEG101-EN-1780, CON-LEG101-EN-1790, CON-LEG101-EN-1800, CON-LEG101-EN-3440 | 100% |
| CON-LEG101-LR-3770 |  | Granular bedding for Stormwater Utilities Network [Local – 08 ] | 4d | 2026-01-19 A | 2026-01-25 A | CON-LEG101-PR-2110, CON-LEG101-LR-3670 | 100% |
| CON-LEG101-LR-3870 |  | Installation of Pipe for Stormwater Utilities Network [Local – 08 ] | 10d | 2026-01-20 A | 2026-01-31 A | CON-LEG101-PR-2110, CON-LEG101-LR-3770, CON-LEG101-PR-1780 | 100% |
| CON-LEG101-LR-4080 |  | Granular Surround for Stormwater Utilities Network [Local – 08 ] | 6d | 2026-01-20 A | 2026-02-01 A | CON-LEG101-LR-3970, CON-LEG101-EN-3450 | 100% |
| CON-LEG101-LR-3970 |  | Testing for Stormwater Utilities Network [Local – 08 ] | 8d | 2026-02-21 A | 2026-02-26 A | CON-LEG101-LR-3870 | 100% |
| CON-LEG101-LR-4190 |  | Installation of Micron Marker Magnetic Tape [Local – 08 ] | 4d | 2026-02-28 A | 2026-03-05 A | CON-LEG101-LR-4080 | 100% |
| CON-LEG101-LR-4300 |  | Backfilling to Subgrade Elevation [Local – 08 ] | 7d | 2026-02-28 A | 2026-03-07 A | CON-LEG101-LR-4190, CON-LEG101-EN-3440 | 100% |
|  | 1 | **Manhole** |  | 2026-01-17 | 2027-01-14 |  |  |
| CON-LEG101-LR-11720 |  | Excavation of Inlet Manholes [Local – 08 ] | 10d | 2026-01-17 A | 2026-01-21 A | CON-LEG101-LR-3670 | 100% |
| CON-LEG101-LR-11730 |  | PC of Inlet Manholes [Local – 08 ] | 3d | 2026-01-25 A | 2026-01-31 A | CON-LEG101-LR-11720 | 100% |
| CON-LEG101-LR-4410 |  | Installation of Inlet Manholes [Local – 08 ] | 14d | 2026-01-29 A | 2026-06-01 A | CON-LEG101-LR-11730, CON-LEG101-LR-3870, CON-LEG101-PR-1980 | 100% |
| CON-LEG101-LR-11740 |  | Backfilling of Inlet Manholes [Local – 08 ] | 10d | 2026-03-25 A | 2026-06-04 A | CON-LEG101-LR-4410 | 100% |

| ID | WBS | Task | Duration | Start | Finish | Predecessors | Complete | Total float |
| --- | --- | --- | --- | --- | --- | --- | --- | --- |
| CON-LEG101-LR-11750 |  | Finishing and Testing of Inlet Manholes [Local – 08 ] | 10d | 2026-08-26 A | 2027-01-14 | CON-LEG101-LR-11740, CON-LEG101-LR-4410, CON-LEG101-LR-11660 | 95% | 88.2d |
|  | 3 | **Concrete Chambers/Outfalls** |  | 2026-06-09 | 2027-02-08 |  |  |  |
| CON-LEG101-LR-11760 |  | Excavation of Concrete chambers [Local – 08 ] | 6d | 2026-06-09 A | 2026-06-24 A | CON-LEG101-LR-4410 | 100% |  |
| CON-LEG101-LR-11770 |  | PC of Concrete chambers [Local – 08 ] | 2d | 2026-06-11 A | 2026-06-25 A | CON-LEG101-LR-11760 | 100% |  |
| CON-LEG101-LR-11780 |  | Installation UPVC Pipes to Concrete chambers [Local – 08 ] | 10d | 2026-06-13 A | 2026-06-28 A | CON-LEG101-LR-11760, CON-LEG101-LR-4510 | 100% |  |
| CON-LEG101-LR-4510 |  | Installation of Concrete chambers [Local – 08 ] | 12d | 2026-06-13 A | 2026-06-27 A | CON-LEG101-LR-11770, CON-LEG101-LR-3870, CON-LEG101-PR-1990 | 100% |  |
| CON-LEG101-LR-11790 |  | Backfilling to Concrete chambers [Local – 08 ] | 6d | 2026-06-17 A | 2026-06-30 A | CON-LEG101-LR-11780, CON-LEG101-LR-4510 | 100% |  |
| CON-LEG101-LR-11800 |  | FInishing and Testing of Concrete chambers [Local – 08 ] | 11d | 2026-08-26 A | 2027-02-08 | CON-LEG101-LR-11780, CON-LEG101-LR-11790, CON-LEG101-LR-4510, CON-LEG101-LR-11710 | 95% | 67.15d |
|  | 7 | **Shallow infrastructure network** |  | 2026-01-13 | 2027-10-24 |  |  |  |
|  | 1 | **Local – 01** |  | 2026-01-13 | 2027-08-12 |  |  |  |
|  | 1 | **LOCAL - 01 Segment-01 (From 0+000 to 1+066)** |  | 2026-01-13 | 2027-08-07 |  |  |  |
|  | 5 | **TSE Network** |  | 2026-01-13 | 2026-09-05 |  |  |  |
|  | 2 | **Pipe Work** |  | 2026-01-13 | 2026-05-04 |  |  |  |
| CON-LEG101-LR-1300 |  | Excavation for TSE Network [Local – 01 Segment-01] | 15d | 2026-01-13 A | 2026-01-21 A | CON-LEG101-LR-3410, CON-LEG101-LR-10910, CON-LEG101-LR-4200, CON-LEG101-LR-2780, CON-LEG101-EN-1720, CON-LEG101-EN-1730, CON-LEG101-EN-1740, CON-LEG101-EN-1810 | 100% |  |
| CON-LEG101-LR-1410 |  | Granular bedding for TSE Network [Local – 01 Segment-01] | 12d | 2026-01-14 A | 2026-01-22 A | CON-LEG101-LR-1300 | 100% |  |
| CON-LEG101-LR-1520 |  | Installation of Pipe for TSE Network [Local – 01 Segment-01] | 20d | 2026-01-15 A | 2026-02-19 A | CON-LEG101-PR-2590, CON-LEG101-LR-1410, CON-LEG101-PR-1690 | 100% |  |
| CON-LEG101-LR-1850 |  | Granular Surround for TSE Network [Local – 01 Segment-01] | 14d | 2026-01-25 A | 2026-02-19 A | CON-LEG101-LR-1750, CON-LEG101-EN-3450 | 100% |  |
| CON-LEG101-LR-1960 |  | Installation of Micron Marker Magnetic Tape [Local – 01 Segment-01] | 6d | 2026-02-07 A | 2026-02-21 A | CON-LEG101-LR-1850 | 100% |  |
| CON-LEG101-LR-2070 |  | Backfilling to Subgrade Elevation [Local – 01 Segment-01] | 14d | 2026-02-08 A | 2026-02-23 A | CON-LEG101-LR-1960, CON-LEG101-EN-3440, CON-LEG101-MS-1120 | 100% |  |
| CON-LEG101-LR-1750 |  | Concrete encasement, pipe dia 110 mm [Local – 01 Segment-01] | 3d | 2026-02-28 A | 2026-03-01 A | CON-LEG101-LR-1640, CON-LEG101-EN-3450, CON-LEG101-PR-1430 | 100% |  |
| CON-LEG101-LR-1640 |  | Testing for TSE Network [Local – 01 Segment-01] | 14d | 2026-03-10 A | 2026-05-04 A | CON-LEG101-LR-1520 | 100% |  |
|  | 1 | **Valves/Chamber** |  | 2026-02-25 | 2026-09-05 |  |  |  |
| CON-LEG101-LR-2460 |  | Installation of Fire Hydrant [Local – 01 Segment-01] | 21d | 2026-02-25 A | 2026-07-01 A | CON-LEG101-LR-1520, CON-LEG101-LR-2380, CON-LEG101-PR-2470 | 100% |  |
| CON-LEG101-LR-2190 |  | Installation of Gate (Sluice) valves (Direct buried) [Local – 01 Segment-01] | 21d | 2026-02-28 A | 2026-07-02 A | CON-LEG101-LR-2680, CON-LEG101-LR-1520, CON-LEG101-PR-1970, CON-LEG101-MS-1120 | 100% |  |
| CON-LEG101-LR-2310 |  | Installation of Wash-out Valves [Local – 01 Segment-01] | 15d | 2026-02-28 A | 2026-07-02 A | CON-LEG101-LR-2190, CON-LEG101-PR-1970 | 100% |  |
| CON-LEG101-LR-2380 |  | Installation of Air Valves [Local – 01 Segment-01] | 15d | 2026-02-28 A | 2026-07-02 A | CON-LEG101-LR-2310, CON-LEG101-PR-1970 | 100% |  |
| CON-LEG101-LR-2680 |  | Installation of Air Valve chambers [Local – 01 Segment-01] | 21d | 2026-02-28 A | 2026-09-05 A | CON-LEG101-LR-2610, CON-LEG101-PR-1970 | 100% |  |
| CON-LEG101-LR-2610 |  | Installation of Wash out chambers [Local – 01 Segment-01] | 21d | 2026-04-21 A | 2026-09-03 A | CON-LEG101-LR-1520, CON-LEG101-PR-1970 | 100% |  |
|  | 6 | **Public Water Utility Distribution** |  | 2026-01-13 | 2026-09-05 |  |  |  |
|  | 2 | **Pipe Work** |  | 2026-01-13 | 2026-03-24 |  |  |  |
| CON-LEG101-LR-10040 |  | Excavation for Public Water Utility Distribution Piping [Local – 01 Segment-01] | 17d | 2026-01-13 A | 2026-01-21 A | CON-LEG101-LR-1300, CON-LEG101-EN-1690, CON-LEG101-EN-1700, CON-LEG101-EN-1710, CON-LEG101-EN-3440 | 100% |  |
| CON-LEG101-LR-10140 |  | Granular bedding for Public Water Utility Distribution Piping [Local – 01 Segment-01] | 10d | 2026-01-13 A | 2026-01-22 A | CON-LEG101-LR-10040 | 100% |  |
| CON-LEG101-LR-10240 |  | Installation of Pipe for Public Water Utility Distribution Piping [Local – 01 Segment-01] | 18d | 2026-01-15 A | 2026-02-19 A | CON-LEG101-PR-4010, CON-LEG101-LR-10140, CON-LEG101-PR-1660 | 100% |  |
| CON-LEG101-LR-10540 |  | Granular Surround for Public Water Utility Distribution Piping [Local – 01 Segment-01] | 13d | 2026-01-26 A | 2026-02-19 A | CON-LEG101-LR-10440, CON-LEG101-EN-3450 | 100% |  |
| CON-LEG101-LR-10640 |  | Installation of Micron Marker Magnetic Tape [Local – 01 Segment-01] | 2d | 2026-02-07 A | 2026-02-21 A | CON-LEG101-LR-10540 | 100% |  |
| CON-LEG101-LR-10740 |  | Backfilling to Subgrade Elevation [Local – 01 Segment-01] | 10d | 2026-02-08 A | 2026-02-23 A | CON-LEG101-LR-10640, CON-LEG101-EN-3440 | 100% |  |
| CON-LEG101-LR-10440 |  | Concrete encasement, pipe dia 110 mm [Local – 01 Segment-01] | 3d | 2026-02-28 A | 2026-03-01 A | CON-LEG101-LR-10340, CON-LEG101-EN-3450, CON-LEG101-PR-1430 | 100% |  |
| CON-LEG101-LR-10340 |  | Testing for Public Water Utility Distribution Piping [Local – 01 Segment-01] | 10d | 2026-03-11 A | 2026-03-24 A | CON-LEG101-LR-10240 | 100% |  |
|  | 1 | **Valves/Chamber** |  | 2026-02-28 | 2026-09-05 |  |  |  |
| CON-LEG101-LR-1000 |  | Installation of Gate (Sluice) valves (Direct buried) [Local – 01 Segment-01] | 10d | 2026-02-28 A | 2026-08-05 A | CON-LEG101-PR-1960 SS, CON-LEG101-LR-10240, CON-LEG101-PR-1960, CON-LEG101-LR-10740 | 100% |  |
| CON-LEG101-LR-1110 |  | Installation of Wash-out Valves [Local – 01 Segment-01] | 7d | 2026-02-28 A | 2026-07-02 A | CON-LEG101-LR-1210, CON-LEG101-LR-1000, CON-LEG101-PR-1960 | 100% |  |
| CON-LEG101-LR-1150 |  | Installation of Air Valves [Local – 01 Segment-01] | 7d | 2026-02-28 A | 2026-07-02 A | CON-LEG101-LR-1250, CON-LEG101-LR-1110, CON-LEG101-PR-1960 | 100% |  |
| CON-LEG101-LR-1250 |  | Installation of Air Valve chambers [Local – 01 Segment-01] | 20d | 2026-02-28 A | 2026-09-05 A | CON-LEG101-LR-10240, CON-LEG101-LR-1210, CON-LEG101-PR-1960 | 100% |  |
| CON-LEG101-LR-1210 |  | Installation of Wash out chambers [Local – 01 Segment-01] | 20d | 2026-04-21 A | 2026-09-03 A | CON-LEG101-LR-10240, CON-LEG101-PR-1960 SF, CON-LEG101-LR-10240 FF, CON-LEG101-PR-1960, CON-LEG101-LR-2610 | 100% |  |
|  | 1 | **Electrical Works** |  | 2026-04-02 | 2027-07-13 |  |  |  |
|  | 3 | **Low Voltage** |  | 2026-04-02 | 2027-07-13 |  |  |  |
| CON-LEG101-LR-7980 |  | Installation of Low Voltage Cables Duct Banks [Local – 01 Segment-01] | 12d | 2026-04-02 A | 2026-04-30 A | CON-LEG101-LR-7780, CON-LEG101-PR-1320 | 100% |  |
| CON-LEG101-LR-7780 |  | Excavation works for Low Voltage Cables [Local – 01 Segment-01] | 17d | 2026-06-01 A | 2026-10-27 A | CON-LEG101-LR-4200, CON-LEG101-LR-10910, CON-LEG101-LR-3500, CON-LEG101-LR-3410, CON-LEG101-LR-10740, CON-LEG101-LR-2070, CON-LEG101-LR-6880, CON-LEG101-EN-1680, CON-LEG101-EN-3440, CON-LEG101-MS-1120 | 100% |  |
| CON-LEG101-LR-7880 |  | Installation of Low Voltage Cables [Local – 01 Segment-01] | 21d | 2026-06-04 A | 2026-10-29 A | CON-LEG101-LR-7980, CON-LEG101-LR-7780, CON-LEG101-PR-1900 | 100% |  |
| CON-LEG101-LR-8760 |  | Installation of Earthing System [Local – 01 Segment-01] | 7d | 2026-07-05 A | 2027-07-13 | CON-LEG101-PR-1320, CON-LEG101-PR-1930, CON-LEG101-LR-7980, CON-LEG101-PR-2550, CON-LEG101-LR-7880, CON-LEG101-PR-1480, CON-LEG101-PR-1310 | 70% | 35.5d |
|  | 10 | **Telecommunications** |  | 2026-04-02 | 2027-07-26 |  |  |  |
| CON-LEG101-LR-8830 |  | Installation of Sand and soil encased duct banks for primary network [Local – 01 Segment-01] | 20d | 2026-04-02 A | 2026-04-30 A | CON-LEG101-LR-7780, CON-LEG101-EN-3280, CON-LEG101-EN-3440 | 100% |  |
| CON-LEG101-LR-9330 |  | Installation of Reinforced concrete manhole [Local – 01 Segment-01] | 21d | 2026-04-04 A | 2027-07-26 | CON-LEG101-LR-9230, CON-LEG101-PR-3260 | 90% | 23.75d |
| CON-LEG101-LR-8930 |  | Installation of Concrete encased duct banks for primary network [Local – 01 Segment-01] | 11d | 2026-04-07 A | 2026-04-26 A | CON-LEG101-PR-3180, CON-LEG101-PR-4020, CON-LEG101-LR-8830, CON-LEG101-PR-1430, CON-LEG101-MS-1130, CON-LEG101-LR-7880 | 100% |  |
| CON-LEG101-LR-9030 |  | Installation of Sand encased duct banks for secondary network [Local – 01 Segment-01] | 14d | 2026-07-08 A | 2027-07-14 | CON-LEG101-LR-8930, CON-LEG101-EN-3440, CON-LEG101-LR-7880 | 75% | 23.75d |
| CON-LEG101-LR-9130 |  | Installation of Sand and soil encased duct banks, for combined network of primary and secondary [Local – 01 Segment-01 | 18d | 2026-07-08 A | 2027-07-19 | CON-LEG101-LR-9030, CON-LEG101-EN-3440 | 75% | 23.75d |
| CON-LEG101-LR-9230 |  | Installation of Concrete encased duct banks for for combined network of primary and secondary [Local – 01 Segment-01] | 15d | 2026-07-08 A | 2027-07-24 | CON-LEG101-PR-3250, CON-LEG101-LR-9130, CON-LEG101-PR-1430 | 75% | 23.75d |
|  | 11 | **CCTV feeding system and GSM** |  | 2026-04-13 | 2027-07-17 |  |  |  |
| CON-LEG101-LR-8550 |  | Excavation works for Low Voltage Cables for CCTV feeding system and GSM [Local – 01 Segment-01] | 6d | 2026-04-13 A | 2026-10-15 A | CON-LEG101-LR-8830, CON-LEG101-EN-3290, CON-LEG101-EN-3440 | 100% |  |
| CON-LEG101-LR-9870 |  | Installation of 35 Meters mono pole with Double Platform for Access Points [Local – 01 Segment-01] | 2d | 2026-05-16 A | 2026-07-08 A | CON-LEG101-LR-9850, CON-LEG101-PR-3830 | 100% |  |
| CON-LEG101-LR-9880 |  | Installation of 25 Meters pole for CCTV Cameras [Local – 01 Segment-01] | 2d | 2026-05-16 A | 2026-07-12 A | CON-LEG101-LR-9870 SS, CON-LEG101-PR-3870 | 100% |  |
| CON-LEG101-LR-9430 |  | Installation of Fiber Optic Patch Panel 12 port [Local – 01 Segment-01] | 7d | 2026-07-01 A | 2026-10-15 A | CON-LEG101-LR-8620, CON-LEG101-PR-3360 | 100% |  |
| CON-LEG101-LR-9450 |  | Installation of Modular Industrial Switches for main pole [Local – 01 Segment-01] | 7d | 2026-07-01 A | 2026-10-15 A | CON-LEG101-LR-9430, CON-LEG101-PR-3370 | 100% |  |
| CON-LEG101-LR-9460 |  | Installation of 8POE ports Industrial Switches for remote poles [Local – 01 Segment-01] | 7d | 2026-07-01 A | 2026-10-15 A | CON-LEG101-LR-9450, CON-LEG101-PR-3410 | 100% |  |
| CON-LEG101-LR-9520 |  | Installation of Core Switch [Local – 01 Segment-01] | 3d | 2026-07-01 A | 2026-10-15 A | CON-LEG101-LR-9460, CON-LEG101-PR-3450 | 100% |  |
| CON-LEG101-LR-9540 |  | Installation of Access Switch 48 port [Local – 01 Segment-01] | 3d | 2026-07-01 A | 2026-10-15 A | CON-LEG101-LR-9520, CON-LEG101-PR-3490 | 100% |  |
| CON-LEG101-LR-9560 |  | Installation of Server [Local – 01 Segment-01] | 3d | 2026-07-01 A | 2026-10-15 A | CON-LEG101-LR-9540, CON-LEG101-PR-3530 | 100% |  |
| CON-LEG101-LR-9590 |  | Installation of Stand rack 42U- 19" [Local – 01 Segment-01] | 3d | 2026-07-01 A | 2026-10-15 A | CON-LEG101-LR-9560, CON-LEG101-PR-3570 | 100% |  |
| CON-LEG101-LR-9610 |  | Installation of IP Outdoor CCTV POE Camera,5 MP, Metal Housing [Local – 01 Segment-01] | 3d | 2026-07-01 A | 2026-10-15 A | CON-LEG101-LR-9590, CON-LEG101-PR-3610 | 100% |  |
| CON-LEG101-LR-9690 |  | Installation of Outdoor PTZ IP66 [Local – 01 Segment-01] | 2d | 2026-07-01 A | 2026-10-15 A | CON-LEG101-LR-9610, CON-LEG101-PR-3650 | 100% |  |

| ID | WBS | Task | Duration | Start | Finish | Predecessors | Complete | Total float |
| --- | --- | --- | --- | --- | --- | --- | --- | --- |
| CON-LEG101-LR-9850 |  | Installation of Horizontal Power Distribution Unit (min 8 outlets) [Local – 01 Segment-01] | 2d | 2026-07-01 A | 2026-10-15 A | CON-LEG101-LR-9840, CON-LEG101-PR-3730 | 100% |  |
| CON-LEG101-LR-9940 |  | Installation of Short Range wireless point to point wireless bridge [Local – 01 Segment-01] | 2d | 2026-07-01 A | 2026-10-15 A | CON-LEG101-LR-9880 SS, CON-LEG101-PR-3910 | 100% |  |
| CON-LEG101-LR-8620 |  | Installation of Low Voltage Cables for CCTV feeding system and GSM [Local – 01 Segment-01] | 4d | 2026-08-29 A | 2026-10-15 A | CON-LEG101-LR-8550, CON-LEG101-PR-1900 | 100% |  |
| CON-LEG101-LR-9780 |  | Installation of Security workstation with 1 x 19" LED screen [Local – 01 Segment-01] | 1d | 2027-07-11 | 2027-07-11 | CON-LEG101-LR-9690, CON-LEG101-PR-3690 |  | 29.6d |
| CON-LEG101-LR-9790 |  | Installation of LED Screen 43" (24/7 operation) with Ethernet decoders [Local – 01 Segment-01] | 2d | 2027-07-12 | 2027-07-13 | CON-LEG101-PR-3950, CON-LEG101-LR-9780, CON-LEG101-PR-3290 |  | 29.6d |
| CON-LEG101-LR-9830 |  | Installation of Network Video Recorder 4k 64 Channel [Local – 01 Segment-01] | 1d | 2027-07-14 | 2027-07-14 | CON-LEG101-PR-3960, CON-LEG101-LR-9790, CON-LEG101-PR-3760 |  | 29.6d |
| CON-LEG101-LR-9840 |  | Installation of Keypad [Local – 01 Segment-01] | 2d | 2027-07-15 | 2027-07-17 | CON-LEG101-PR-3970, CON-LEG101-LR-9830, CON-LEG101-PR-3790 |  | 29.6d |
|  | 12 | **Earthing System** |  | 2027-07-18 | 2027-07-19 |  |  |  |
| CON-LEG101-LR-8280 |  | Installation of Earthing for Distribution panels,SL feeder pillars, KWH, Unit substations and RMU [Local – 01 Segment-01 | 2d | 2027-07-18 | 2027-07-19 | CON-LEG101-PR-1480, CON-LEG101-LR-9940 SS, CON-LEG101-PR-1310 |  | 29.6d |
|  | 9 | **Road Lighting** |  | 2026-03-14 | 2027-08-07 |  |  |  |
| CON-LEG101-LR-8080 |  | Installation of Lighting poles [Local – 01 Segment-01] | 17d | 2026-03-14 A | 2026-10-22 A | CON-LEG101-PR-1950, CON-LEG101-LR-10740, CON-LEG101-LR-2070, CON-LEG101-LR-3410, CON-LEG101-LR-4200, CON-LEG101-PR-1910 | 100% |  |
| CON-LEG101-LR-8180 |  | Installation of Street Lighting Luminaire [Local – 01 Segment-01] | 12d | 2026-05-16 A | 2026-10-22 A | CON-LEG101-LR-8080, CON-LEG101-PR-1920 | 100% |  |
| CON-LEG101-LR-7420 |  | Installation of Unit Substation Including concrete foundations and fencing [Local – 01 Segment-01] | 7d | 2026-07-05 A | 2027-07-17 | CON-LEG101-LR-8080, CON-LEG101-LR-8550, CON-LEG101-EN-3310, CON-LEG101-EN-3320, CON-LEG101-EN-3330, CON-LEG101-EN-3360, CON-LEG101-PR-1890 | 25% | -78.15d |
| CON-LEG101-LR-8430 |  | Installation of Street Lighting feeder pillars / Lighting panels [Local – 01 Segment-01] | 3d | 2026-07-05 A | 2026-10-25 A | CON-LEG101-LR-8080, CON-LEG101-PR-1940, CON-LEG101-PR-2550, CON-LEG101-LR-8180 | 100% |  |
| CON-LEG101-LR-8330 |  | Installation of Earthing for Streetlighting feeders for every end pole circuits. [Local – 01 Segment-01] | 6d | 2026-08-01 A | 2027-08-07 | CON-LEG101-LR-7500, CON-LEG101-LR-7420, CON-LEG101-LR-8430, CON-LEG101-PR-1480, CON-LEG101-LR-8180, CON-LEG101-PR-1310 | 40% | -78.15d |
| CON-LEG101-LR-7500 |  | Installation of Ring Main Unit RMU [Local – 01 Segment-01] | 15d | 2027-07-17 | 2027-08-03 | CON-LEG101-LR-8080, CON-LEG101-LR-7420, CON-LEG101-PR-2510 |  | -78.15d |
|  | 2 | **LOCAL - 01 Segment-02 (From 1+066 to 2+133)** |  | 2026-01-22 | 2027-08-12 |  |  |  |
|  | 5 | **TSE Network** |  | 2026-01-22 | 2026-09-06 |  |  |  |
|  | 2 | **Pipe Work** |  | 2026-01-22 | 2026-06-02 |  |  |  |
| CON-LEG101-LR-1310 |  | Excavation for TSE Network [Local – 01 Segment-02] | 10d | 2026-01-22 A | 2026-01-31 A | CON-LEG101-LR-3420, CON-LEG101-LR-4210, CON-LEG101-LR-10960, CON-LEG101-EN-1720, CON-LEG101-EN-1730, CON-LEG101-EN-1740, CON-LEG101-EN-1810 | 100% |  |
| CON-LEG101-LR-1420 |  | Granular bedding for TSE Network [Local – 01 Segment-02] | 7d | 2026-01-26 A | 2026-05-21 A | CON-LEG101-LR-1310 | 100% |  |
| CON-LEG101-LR-1530 |  | Installation of Pipe for TSE Network [Local – 01 Segment-02] | 20d | 2026-01-27 A | 2026-05-24 A | CON-LEG101-PR-2590, CON-LEG101-LR-1420, CON-LEG101-PR-1690 | 100% |  |
| CON-LEG101-LR-1860 |  | Granular Surround for TSE Network [Local – 01 Segment-02] | 14d | 2026-01-29 A | 2026-05-25 A | CON-LEG101-LR-1760, CON-LEG101-EN-3450 | 100% |  |
| CON-LEG101-LR-1760 |  | Concrete encasement, pipe dia 110 mm [Local – 01 Segment-02] | 3d | 2026-02-07 A | 2026-05-25 A | CON-LEG101-LR-1650, CON-LEG101-EN-3450, CON-LEG101-PR-1430 | 100% |  |
| CON-LEG101-LR-1970 |  | Installation of Micron Marker Magnetic Tape [Local – 01 Segment-02] | 6d | 2026-02-25 A | 2026-05-31 A | CON-LEG101-LR-1860 | 100% |  |
| CON-LEG101-LR-2090 |  | Backfilling to Subgrade Elevation [Local – 01 Segment-02] | 14d | 2026-02-26 A | 2026-06-01 A | CON-LEG101-LR-1970, CON-LEG101-EN-3440 | 100% |  |
| CON-LEG101-LR-1650 |  | Testing for TSE Network [Local – 01 Segment-02] | 14d | 2026-03-10 A | 2026-06-02 A | CON-LEG101-LR-1530 | 100% |  |
|  | 1 | **Valves/Chamber** |  | 2026-03-04 | 2026-09-06 |  |  |  |
| CON-LEG101-LR-2200 |  | Installation of Gate (Sluice) valves (Direct buried) [Local – 01 Segment-02] | 10d | 2026-03-04 A | 2026-07-08 A | CON-LEG101-LR-2620, CON-LEG101-LR-2690, CON-LEG101-LR-1530, CON-LEG101-PR-1970, CON-LEG101-LR-1150 | 100% |  |
| CON-LEG101-LR-2470 |  | Installation of Fire Hydrant [Local – 01 Segment-02] | 10d | 2026-03-04 A | 2026-09-06 A | CON-LEG101-LR-2390, CON-LEG101-PR-2470, CON-LEG101-LR-2310, CON-LEG101-LR-2460 | 100% |  |
| CON-LEG101-LR-2690 |  | Installation of Air Valve chambers [Local – 01 Segment-02] | 21d | 2026-03-15 A | 2026-09-05 A | CON-LEG101-LR-1530, CON-LEG101-LR-2620, CON-LEG101-PR-1970 | 100% |  |
| CON-LEG101-LR-2320 |  | Installation of Wash-out Valves [Local – 01 Segment-02] | 19d | 2026-03-16 A | 2026-07-08 A | CON-LEG101-LR-2620, CON-LEG101-LR-2200, CON-LEG101-PR-1970 | 100% |  |
| CON-LEG101-LR-2390 |  | Installation of Air Valves [Local – 01 Segment-02] | 15d | 2026-03-16 A | 2026-07-08 A | CON-LEG101-LR-2690, CON-LEG101-LR-2320, CON-LEG101-PR-1970 | 100% |  |
| CON-LEG101-LR-2620 |  | Installation of Wash out chambers [Local – 01 Segment-02] | 21d | 2026-04-21 A | 2026-09-03 A | CON-LEG101-LR-1530, CON-LEG101-LR-2090 SS, CON-LEG101-PR-1970 | 100% |  |
|  | 6 | **Public Water Utility Distribution** |  | 2026-01-22 | 2026-09-05 |  |  |  |
|  | 2 | **Pipe Work** |  | 2026-01-22 | 2026-06-02 |  |  |  |
| CON-LEG101-LR-10050 |  | Excavation for Public Water Utility Distribution Piping [Local – 01 Segment-02] | 17d | 2026-01-22 A | 2026-02-05 A | CON-LEG101-LR-3420, CON-LEG101-LR-4210, CON-LEG101-LR-10960, CON-LEG101-EN-1690, CON-LEG101-EN-1700, CON-LEG101-EN-1710, CON-LEG101-EN-3440 | 100% |  |
| CON-LEG101-LR-10150 |  | Granular bedding for Public Water Utility Distribution Piping [Local – 01 Segment-02] | 13d | 2026-01-26 A | 2026-05-21 A | CON-LEG101-LR-10050 | 100% |  |
| CON-LEG101-LR-10250 |  | Installation of Pipe for Public Water Utility Distribution Piping [Local – 01 Segment-02] | 18d | 2026-01-27 A | 2026-05-24 A | CON-LEG101-PR-4010, CON-LEG101-LR-10150, CON-LEG101-PR-1660 | 100% |  |
| CON-LEG101-LR-10550 |  | Granular Surround for Public Water Utility Distribution Piping [Local – 01 Segment-02] | 13d | 2026-02-01 A | 2026-05-25 A | CON-LEG101-LR-10450, CON-LEG101-EN-3450 | 100% |  |
| CON-LEG101-LR-10650 |  | Installation of Micron Marker Magnetic Tape [Local – 01 Segment-02] | 2d | 2026-02-25 A | 2026-05-31 A | CON-LEG101-LR-10550 | 100% |  |
| CON-LEG101-LR-10750 |  | Backfilling to Subgrade Elevation [Local – 01 Segment-02] | 10d | 2026-02-26 A | 2026-06-01 A | CON-LEG101-LR-10650, CON-LEG101-EN-3440 | 100% |  |
| CON-LEG101-LR-10450 |  | Concrete encasement, pipe dia 110 mm [Local – 01 Segment-02] | 7d | 2026-03-15 A | 2026-05-25 A | CON-LEG101-LR-10350, CON-LEG101-EN-3450, CON-LEG101-PR-1430 | 100% |  |
| CON-LEG101-LR-10350 |  | Testing for Public Water Utility Distribution Piping [Local – 01 Segment-02] | 13d | 2026-03-17 A | 2026-06-02 A | CON-LEG101-LR-10250 | 100% |  |
|  | 1 | **Valves/Chamber** |  | 2026-03-15 | 2026-09-05 |  |  |  |
| CON-LEG101-LR-1260 |  | Installation of Air Valve chambers [Local – 01 Segment-02] | 21d | 2026-03-15 A | 2026-09-05 A | CON-LEG101-LR-10250, CON-LEG101-LR-10750, CON-LEG101-LR-1220, CON-LEG101-PR-1960 | 100% |  |
| CON-LEG101-LR-1120 |  | Installation of Wash-out Valves [Local – 01 Segment-02] | 21d | 2026-04-01 A | 2026-07-08 A | CON-LEG101-LR-1220, CON-LEG101-LR-1010, CON-LEG101-PR-1960 | 100% |  |
| CON-LEG101-LR-1160 |  | Installation of Air Valves [Local – 01 Segment-02] | 21d | 2026-04-01 A | 2026-07-08 A | CON-LEG101-LR-1260, CON-LEG101-LR-1120, CON-LEG101-PR-1960 | 100% |  |
| CON-LEG101-LR-1220 |  | Installation of Wash out chambers [Local – 01 Segment-02] | 21d | 2026-04-21 A | 2026-09-03 A | CON-LEG101-LR-10750, CON-LEG101-LR-10250, CON-LEG101-LR-2690, CON-LEG101-PR-1960 | 100% |  |
| CON-LEG101-LR-1010 |  | Installation of Gate (Sluice) valves (Direct buried) [Local – 01 Segment-02] | 21d | 2026-04-29 A | 2026-07-08 A | CON-LEG101-LR-1220, CON-LEG101-LR-1260, CON-LEG101-LR-10250, CON-LEG101-PR-1960 | 100% |  |
|  | 1 | **Electrical Works** |  | 2026-04-04 | 2027-08-08 |  |  |  |
|  | 3 | **Low Voltage** |  | 2026-04-04 | 2027-08-08 |  |  |  |
| CON-LEG101-LR-7990 |  | Installation of Low Voltage Cables Duct Banks [Local – 01 Segment-02] | 7d | 2026-04-04 A | 2026-04-30 A | CON-LEG101-LR-7790, CON-LEG101-PR-1320 | 100% |  |
| CON-LEG101-LR-7790 |  | Excavation works for Low Voltage Cables [Local – 01 Segment-02] | 17d | 2026-06-24 A | 2026-07-30 A | CON-LEG101-LR-10960, CON-LEG101-LR-4210, CON-LEG101-LR-3510, CON-LEG101-LR-3420, CON-LEG101-LR-2090, CON-LEG101-LR-10750, CON-LEG101-LR-6890, CON-LEG101-EN-1680, CON-LEG101-EN-3440 | 100% |  |
| CON-LEG101-LR-7890 |  | Installation of Low Voltage Cables [Local – 01 Segment-02] | 17d | 2026-06-25 A | 2026-08-01 A | CON-LEG101-LR-7990, CON-LEG101-LR-7790, CON-LEG101-PR-1900 | 100% |  |
| CON-LEG101-LR-8770 |  | Installation of Earthing System [Local – 01 Segment-02] | 8d | 2026-07-06 A | 2027-08-08 | CON-LEG101-PR-1320, CON-LEG101-LR-7990, CON-LEG101-PR-1930, CON-LEG101-LR-7890, CON-LEG101-PR-1480, CON-LEG101-PR-1310, CON-LEG101-LR-8330 | 95% | 13.35d |
|  | 10 | **Telecommunications** |  | 2026-04-04 | 2026-09-10 |  |  |  |
| CON-LEG101-LR-8840 |  | Installation of Sand and soil encased duct banks for primary network [Local – 01 Segment-02] | 20d | 2026-04-04 A | 2026-04-30 A | CON-LEG101-LR-7790, CON-LEG101-EN-3280, CON-LEG101-EN-3440 | 100% |  |
| CON-LEG101-LR-8940 |  | Installation of Concrete encased duct banks for primary network [Local – 01 Segment-02] | 11d | 2026-04-08 A | 2026-04-30 A | CON-LEG101-PR-3180, CON-LEG101-PR-4020, CON-LEG101-LR-8840, CON-LEG101-PR-1430, CON-LEG101-LR-7990 | 100% |  |
| CON-LEG101-LR-9340 |  | Installation of Reinforced concrete manhole [Local – 01 Segment-02] | 21d | 2026-04-09 A | 2026-09-10 A | CON-LEG101-LR-9240, CON-LEG101-PR-3260 | 100% |  |
| CON-LEG101-LR-9040 |  | Installation of Sand encased duct banks for secondary network [Local – 01 Segment-02] | 14d | 2026-07-11 A | 2026-09-10 A | CON-LEG101-LR-8940, CON-LEG101-EN-3440, CON-LEG101-LR-7890, CON-LEG101-MS-1130 | 100% |  |
| CON-LEG101-LR-9140 |  | Installation of Sand and soil encased duct banks, for combined network of primary and secondary [Local – 01 Segment-02 | 18d | 2026-07-11 A | 2026-09-10 A | CON-LEG101-PR-3250, CON-LEG101-LR-9040, CON-LEG101-EN-3440 | 100% |  |
| CON-LEG101-LR-9240 |  | Installation of Concrete encased duct banks for for combined network of primary and secondary [Local – 01 Segment-02] | 9d | 2026-07-11 A | 2026-09-10 A | CON-LEG101-LR-9140, CON-LEG101-PR-1430, CON-LEG101-LR-8330 | 100% |  |
|  | 11 | **CCTV feeding system and GSM** |  | 2026-07-04 | 2026-09-07 |  |  |  |
| CON-LEG101-LR-8560 |  | Excavation works for Low Voltage Cables for CCTV feeding system and GSM [Local – 01 Segment-02] | 8d | 2026-07-04 A | 2026-09-06 A | CON-LEG101-LR-9040, CON-LEG101-LR-9140, CON-LEG101-LR-8840, CON-LEG101-EN-3290, CON-LEG101-EN-3440 | 100% |  |
| CON-LEG101-LR-8630 |  | Installation of Low Voltage Cables for CCTV feeding system and GSM [Local – 01 Segment-02] | 8d | 2026-07-04 A | 2026-09-07 A | CON-LEG101-LR-8560, CON-LEG101-PR-1900 | 100% |  |
| CON-LEG101-LR-9700 |  | Installation of Outdoor PTZ IP66 [Local – 01 Segment-02] | 2d | 2026-07-04 A | 2026-09-03 A | CON-LEG101-LR-9620, CON-LEG101-PR-3650 | 100% |  |
| CON-LEG101-LR-9950 |  | Installation of Short Range wireless point to point wireless bridge [Local – 01 Segment-02] | 7d | 2026-07-04 A | 2026-09-03 A | CON-LEG101-LR-9700, CON-LEG101-PR-3910 | 100% |  |
| CON-LEG101-LR-9620 |  | Installation of IP Outdoor CCTV POE Camera,5 MP, Metal Housing [Local – 01 Segment-02] | 5d | 2026-07-08 A | 2026-09-03 A | CON-LEG101-LR-8630, CON-LEG101-PR-3610 | 100% |  |
|  | 12 | **Earthing System** |  | 2026-07-07 | 2027-08-12 |  |  |  |

| ID | WBS | Task | Duration | Start | Finish | Predecessors | Complete | Total float |
| --- | --- | --- | --- | --- | --- | --- | --- | --- |
| CON-LEG101-LR-8290 |  | Installation of Earthing for Distribution panels,SL feeder pillars, KWH, Unit substations and RMU [Local – 01 Segment-02 | 6d | 2026-07-07 A | 2027-08-12 | CON-LEG101-LR-9950, CON-LEG101-LR-8190, CON-LEG101-LR-9340, CON-LEG101-PR-1480, CON-LEG101-LR-8560, CON-LEG101-PR-1310 | 20% | -78.15d |
|  | 9 | **Road Lighting** |  | 2026-03-28 | 2027-07-12 |  |  |  |
| CON-LEG101-LR-8090 |  | Installation of Lighting poles [Local – 01 Segment-02] | 17d | 2026-03-28 A | 2026-08-17 A | CON-LEG101-PR-1950, CON-LEG101-LR-8080, CON-LEG101-PR-1910 | 100% |  |
| CON-LEG101-LR-8190 |  | Installation of Street Lighting Luminaire [Local – 01 Segment-02] | 6d | 2026-05-20 A | 2026-08-15 A | CON-LEG101-LR-8090, CON-LEG101-PR-1920, CON-LEG101-LR-8440 | 100% |  |
| CON-LEG101-LR-8440 |  | Installation of Street Lighting feeder pillars / Lighting panels [Local – 01 Segment-02] | 3d | 2026-07-05 A | 2026-09-10 A | CON-LEG101-LR-8090, CON-LEG101-PR-1940, CON-LEG101-PR-2550, CON-LEG101-LR-8430 | 100% |  |
| CON-LEG101-LR-8340 |  | Installation of Earthing for Streetlighting feeders for every end pole circuits. [Local – 01 Segment-02] | 6d | 2026-08-05 A | 2027-07-12 | CON-LEG101-LR-8440, CON-LEG101-LR-8090, CON-LEG101-LR-8190, CON-LEG101-PR-1480, CON-LEG101-PR-1310 | 70% | -82.5d |
|  | 3 | **LOCAL - 01 Segment-03 (From 2+133 to 3+200)** |  | 2026-01-14 | 2027-07-17 |  |  |  |
|  | 5 | **TSE Network** |  | 2026-01-14 | 2026-12-01 |  |  |  |
|  | 2 | **Pipe Work** |  | 2026-01-14 | 2026-04-16 |  |  |  |
| CON-LEG101-LR-1320 |  | Excavation for TSE Network [Local – 01 Segment-03] | 19d | 2026-01-14 A | 2026-01-24 A | CON-LEG101-LR-3520, CON-LEG101-LR-3430, CON-LEG101-LR-11060, CON-LEG101-LR-4220, CON-LEG101-LR-2800, CON-LEG101-EN-1720, CON-LEG101-EN-1730, CON-LEG101-EN-1740, CON-LEG101-EN-1810 | 100% |  |
| CON-LEG101-LR-1430 |  | Granular bedding for TSE Network [Local – 01 Segment-03] | 8d | 2026-01-17 A | 2026-03-30 A | CON-LEG101-LR-1320 | 100% |  |
| CON-LEG101-LR-1550 |  | Installation of Pipe for TSE Network [Local – 01 Segment-03] | 20d | 2026-01-19 A | 2026-03-31 A | CON-LEG101-PR-2590, CON-LEG101-LR-1430, CON-LEG101-PR-1690 | 100% |  |
| CON-LEG101-LR-1870 |  | Granular Surround for TSE Network [Local – 01 Segment-03] | 14d | 2026-01-29 A | 2026-04-04 A | CON-LEG101-LR-1770, CON-LEG101-EN-3450 | 100% |  |
| CON-LEG101-LR-1980 |  | Installation of Micron Marker Magnetic Tape [Local – 01 Segment-03] | 6d | 2026-02-25 A | 2026-04-05 A | CON-LEG101-LR-1870 | 100% |  |
| CON-LEG101-LR-2100 |  | Backfilling to Subgrade Elevation [Local – 01 Segment-03] | 14d | 2026-02-26 A | 2026-04-06 A | CON-LEG101-LR-1980, CON-LEG101-EN-3440 | 100% |  |
| CON-LEG101-LR-1770 |  | Concrete encasement, pipe dia 110 mm [Local – 01 Segment-03] | 3d | 2026-04-01 A | 2026-04-02 A | CON-LEG101-LR-1660, CON-LEG101-EN-3450, CON-LEG101-PR-1430 | 100% |  |
| CON-LEG101-LR-1660 |  | Testing for TSE Network [Local – 01 Segment-03] | 14d | 2026-04-14 A | 2026-04-16 A | CON-LEG101-LR-1550 | 100% |  |
|  | 1 | **Valves/Chamber** |  | 2026-03-04 | 2026-12-01 |  |  |  |
| CON-LEG101-LR-2210 |  | Installation of Gate (Sluice) valves (Direct buried) [Local – 01 Segment-03] | 19d | 2026-03-04 A | 2026-07-09 A | CON-LEG101-LR-2630, CON-LEG101-LR-1550, CON-LEG101-PR-1970 | 100% |  |
| CON-LEG101-LR-2480 |  | Installation of Fire Hydrant [Local – 01 Segment-03] | 10d | 2026-03-04 A | 2026-09-29 A | CON-LEG101-LR-2330, CON-LEG101-PR-1970, CON-LEG101-LR-15050, CON-LEG101-PR-2470, CON-LEG101-LR-2470 SS | 100% |  |
| CON-LEG101-LR-15040 |  | Installation of Air Valve chambers [Local – 01 Segment-03] | 10d | 2026-04-01 A | 2026-12-01 | CON-LEG101-LR-2630 | 95% | 110.25d |
| CON-LEG101-LR-15050 |  | Installation of Air Valves [Local – 01 Segment-03] | 10d | 2026-04-01 A | 2026-07-09 A | CON-LEG101-LR-15040 | 100% |  |
| CON-LEG101-LR-2330 |  | Installation of Wash-out Valves [Local – 01 Segment-03] | 15d | 2026-04-01 A | 2026-07-09 A | CON-LEG101-LR-2210, CON-LEG101-PR-1970 | 100% |  |
| CON-LEG101-LR-2630 |  | Installation of Wash out chambers [Local – 01 Segment-03] | 15d | 2026-04-27 A | 2026-11-30 | CON-LEG101-LR-1550, CON-LEG101-PR-1970, CON-LEG101-LR-2100 | 95% | 110.25d |
|  | 6 | **Public Water Utility Distribution** |  | 2026-01-14 | 2026-12-01 |  |  |  |
|  | 2 | **Pipe Work** |  | 2026-01-14 | 2026-04-11 |  |  |  |
| CON-LEG101-LR-10060 |  | Excavation for Public Water Utility Distribution Piping [Local – 01 Segment-03] | 17d | 2026-01-14 A | 2026-01-24 A | CON-LEG101-LR-1320, CON-LEG101-EN-1690, CON-LEG101-EN-1700, CON-LEG101-EN-1710, CON-LEG101-EN-3440 | 100% |  |
| CON-LEG101-LR-10160 |  | Granular bedding for Public Water Utility Distribution Piping [Local – 01 Segment-03] | 13d | 2026-01-17 A | 2026-03-30 A | CON-LEG101-LR-10060 | 100% |  |
| CON-LEG101-LR-10260 |  | Installation of Pipe for Public Water Utility Distribution Piping [Local – 01 Segment-03] | 18d | 2026-01-19 A | 2026-03-31 A | CON-LEG101-PR-4010, CON-LEG101-LR-10160, CON-LEG101-PR-1660 | 100% |  |
| CON-LEG101-LR-10460 |  | Concrete encasement, pipe dia 110 mm [Local – 01 Segment-03] | 3d | 2026-02-10 A | 2026-04-01 A | CON-LEG101-LR-10360, CON-LEG101-EN-3450, CON-LEG101-PR-1430 | 100% |  |
| CON-LEG101-LR-10560 |  | Granular Surround for Public Water Utility Distribution Piping [Local – 01 Segment-03] | 13d | 2026-02-18 A | 2026-04-02 A | CON-LEG101-LR-10460, CON-LEG101-EN-3450 | 100% |  |
| CON-LEG101-LR-10660 |  | Installation of Micron Marker Magnetic Tape [Local – 01 Segment-03] | 2d | 2026-02-25 A | 2026-04-04 A | CON-LEG101-LR-10560 | 100% |  |
| CON-LEG101-LR-10760 |  | Backfilling to Subgrade Elevation [Local – 01 Segment-03] | 10d | 2026-02-26 A | 2026-04-05 A | CON-LEG101-LR-10660, CON-LEG101-EN-3440 | 100% |  |
| CON-LEG101-LR-10360 |  | Testing for Public Water Utility Distribution Piping [Local – 01 Segment-03] | 13d | 2026-03-10 A | 2026-04-11 A | CON-LEG101-LR-10260 | 100% |  |
|  | 1 | **Valves/Chamber** |  | 2026-04-01 | 2026-12-01 |  |  |  |
| CON-LEG101-LR-1130 |  | Installation of Wash-out Valves [Local – 01 Segment-03] | 8d | 2026-04-01 A | 2026-07-09 A | CON-LEG101-LR-1020, CON-LEG101-PR-1960 | 100% |  |
| CON-LEG101-LR-1170 |  | Installation of Air Valves [Local – 01 Segment-03] | 8d | 2026-04-01 A | 2026-07-09 A | CON-LEG101-LR-1130, CON-LEG101-PR-1960 | 100% |  |
| CON-LEG101-LR-1270 |  | Installation of Air Valve chambers [Local – 01 Segment-03] | 20d | 2026-04-01 A | 2026-12-01 | CON-LEG101-LR-10260, CON-LEG101-LR-1230, CON-LEG101-PR-1960 | 95% | 148.4d |
| CON-LEG101-LR-1020 |  | Installation of Gate (Sluice) valves (Direct buried) [Local – 01 Segment-03] | 8d | 2026-04-18 A | 2026-07-09 A | CON-LEG101-LR-1270, CON-LEG101-LR-10260, CON-LEG101-PR-1960, CON-LEG101-LR-15050 | 100% |  |
| CON-LEG101-LR-1230 |  | Installation of Wash out chambers [Local – 01 Segment-03] | 20d | 2026-04-27 A | 2026-11-30 | CON-LEG101-LR-10260, CON-LEG101-PR-1960, CON-LEG101-LR-10660 | 95% | 148.4d |
|  | 1 | **Electrical Works** |  | 2026-05-31 | 2026-09-17 |  |  |  |
|  | 3 | **Low Voltage** |  | 2026-05-31 | 2026-09-17 |  |  |  |
| CON-LEG101-LR-8000 |  | Installation of Low Voltage Cables Duct Banks [Local – 01 Segment-03] | 7d | 2026-05-31 A | 2026-06-04 A | CON-LEG101-LR-7800, CON-LEG101-PR-1320 | 100% |  |
| CON-LEG101-LR-7800 |  | Excavation works for Low Voltage Cables [Local – 01 Segment-03] | 17d | 2026-08-12 A | 2026-09-15 A | CON-LEG101-LR-3520, CON-LEG101-LR-3430, CON-LEG101-LR-11060, CON-LEG101-LR-4220, CON-LEG101-LR-2100, CON-LEG101-LR-10760, CON-LEG101-LR-6900, CON-LEG101-EN-1680, CON-LEG101-EN-3440 | 100% |  |
| CON-LEG101-LR-7900 |  | Installation of Low Voltage Cables [Local – 01 Segment-03] | 17d | 2026-08-12 A | 2026-09-16 A | CON-LEG101-LR-8000, CON-LEG101-LR-7800, CON-LEG101-PR-1900 | 100% |  |
| CON-LEG101-LR-8780 |  | Installation of Earthing System [Local – 01 Segment-03] | 8d | 2026-08-12 A | 2026-09-17 A | CON-LEG101-PR-1320, CON-LEG101-LR-8000, CON-LEG101-PR-1930, CON-LEG101-LR-7900, CON-LEG101-PR-1480, CON-LEG101-PR-1310 | 100% |  |
|  | 10 | **Telecommunications** |  | 2026-05-31 | 2026-11-08 |  |  |  |
| CON-LEG101-LR-9250 |  | Installation of Concrete encased duct banks for for combined network of primary and secondary [Local – 01 Segment-03] | 9d | 2026-05-31 A | 2026-06-04 A | CON-LEG101-PR-3250, CON-LEG101-LR-9150, CON-LEG101-PR-1430 | 100% |  |
| CON-LEG101-LR-9350 |  | Installation of Reinforced concrete manhole [Local – 01 Segment-03] | 17d | 2026-08-22 A | 2026-11-08 A | CON-LEG101-LR-9250, CON-LEG101-PR-3260 | 100% |  |
| CON-LEG101-LR-8850 |  | Installation of Sand and soil encased duct banks for primary network [Local – 01 Segment-03] | 15d | 2026-09-05 A | 2026-11-05 A | CON-LEG101-LR-7800 SS, CON-LEG101-EN-3280, CON-LEG101-EN-3440 | 100% |  |
| CON-LEG101-LR-8950 |  | Installation of Concrete encased duct banks for primary network [Local – 01 Segment-03] | 11d | 2026-09-05 A | 2026-11-05 A | CON-LEG101-PR-3180, CON-LEG101-PR-4020, CON-LEG101-LR-8850, CON-LEG101-PR-1430 | 100% |  |
| CON-LEG101-LR-9050 |  | Installation of Sand encased duct banks for secondary network [Local – 01 Segment-03] | 14d | 2026-09-05 A | 2026-11-05 A | CON-LEG101-LR-8950, CON-LEG101-EN-3440 | 100% |  |
| CON-LEG101-LR-9150 |  | Installation of Sand and soil encased duct banks, for combined network of primary and secondary [Local – 01 Segment-03 | 18d | 2026-09-05 A | 2026-11-05 A | CON-LEG101-LR-9050, CON-LEG101-EN-3440, CON-LEG101-LR-7900 | 100% |  |
|  | 11 | **CCTV feeding system and GSM** |  | 2026-07-06 | 2026-09-01 |  |  |  |
| CON-LEG101-LR-8570 |  | Excavation works for Low Voltage Cables for CCTV feeding system and GSM [Local – 01 Segment-03] | 10d | 2026-07-06 A | 2026-09-01 A | CON-LEG101-LR-8850, CON-LEG101-EN-3290, CON-LEG101-EN-3440, CON-LEG101-LR-9050 | 100% |  |
| CON-LEG101-LR-8640 |  | Installation of Low Voltage Cables for CCTV feeding system and GSM [Local – 01 Segment-03] | 10d | 2026-07-06 A | 2026-09-01 A | CON-LEG101-LR-8570, CON-LEG101-PR-1900, CON-LEG101-LR-1170 | 100% |  |
| CON-LEG101-LR-9710 |  | Installation of Outdoor PTZ IP66 [Local – 01 Segment-03] | 2d | 2026-07-06 A | 2026-09-01 A | CON-LEG101-LR-9630, CON-LEG101-PR-3650 | 100% |  |
| CON-LEG101-LR-9960 |  | Installation of Short Range wireless point to point wireless bridge [Local – 01 Segment-03] | 7d | 2026-07-06 A | 2026-09-01 A | CON-LEG101-LR-9710, CON-LEG101-PR-3910 | 100% |  |
| CON-LEG101-LR-9630 |  | Installation of IP Outdoor CCTV POE Camera,5 MP, Metal Housing [Local – 01 Segment-03] | 5d | 2026-07-11 A | 2026-09-01 A | CON-LEG101-LR-8640, CON-LEG101-PR-3610 | 100% |  |
|  | 12 | **Earthing System** |  | 2027-07-04 | 2027-07-12 |  |  |  |
| CON-LEG101-LR-8300 |  | Installation of Earthing for Distribution panels,SL feeder pillars, KWH, Unit substations and RMU [Local – 01 Segment-03 | 8d | 2027-07-04 | 2027-07-12 | CON-LEG101-LR-9350, CON-LEG101-LR-8100, CON-LEG101-LR-8200, CON-LEG101-LR-8450, CON-LEG101-PR-1480, CON-LEG101-LR-9960, CON-LEG101-PR-1310 |  | -25.6d |
|  | 9 | **Road Lighting** |  | 2026-03-15 | 2027-07-17 |  |  |  |
| CON-LEG101-LR-8100 |  | Installation of Lighting poles [Local – 01 Segment-03] | 17d | 2026-03-15 A | 2026-10-24 A | CON-LEG101-PR-1950, CON-LEG101-LR-7800, CON-LEG101-PR-1910 | 100% |  |
| CON-LEG101-LR-8200 |  | Installation of Street Lighting Luminaire [Local – 01 Segment-03] | 6d | 2026-08-12 A | 2026-10-24 A | CON-LEG101-LR-8100, CON-LEG101-PR-1920 | 100% |  |
| CON-LEG101-LR-8450 |  | Installation of Street Lighting feeder pillars / Lighting panels [Local – 01 Segment-03] | 7d | 2026-08-12 A | 2026-11-05 A | CON-LEG101-LR-8100, CON-LEG101-PR-1940, CON-LEG101-PR-2550 | 100% |  |
| CON-LEG101-LR-8350 |  | Installation of Earthing for Streetlighting feeders for every end pole circuits. [Local – 01 Segment-03] | 6d | 2026-09-05 A | 2027-07-17 | CON-LEG101-LR-8450, CON-LEG101-PR-1480, CON-LEG101-LR-8200, CON-LEG101-PR-1310, CON-LEG101-LR-8340 | 30% | -82.5d |
|  | 2 | **Local – 02** |  | 2026-02-04 | 2027-07-25 |  |  |  |
|  | 5 | **TSE Network** |  | 2026-02-04 | 2026-12-01 |  |  |  |
|  | 2 | **Pipe Work** |  | 2026-02-04 | 2026-05-21 |  |  |  |
| CON-LEG101-LR-1330 |  | Excavation for TSE Network [Local – 02 ] | 13d | 2026-02-04 A | 2026-02-15 A | CON-LEG101-LR-3440, CON-LEG101-LR-3530, CON-LEG101-LR-11170, CON-LEG101-LR-4230, CON-LEG101-LR-2810, CON-LEG101-EN-1720, CON-LEG101-EN-1730, CON-LEG101-EN-1740, CON-LEG101-EN-1810 | 100% |  |

| ID | WBS | Task | Duration | Start | Finish | Predecessors | Complete | Total float |
| --- | --- | --- | --- | --- | --- | --- | --- | --- |
| CON-LEG101-LR-1440 |  | Granular bedding for TSE Network [Local – 02 ] | 10d | 2026-02-05 A | 2026-04-22 A | CON-LEG101-LR-1330 | 100% |  |
| CON-LEG101-LR-1560 |  | Installation of Pipe for TSE Network [Local – 02 ] | 14d | 2026-02-05 A | 2026-04-23 A | CON-LEG101-PR-2590, CON-LEG101-LR-1440, CON-LEG101-PR-1690 | 100% |  |
| CON-LEG101-LR-1880 |  | Granular Surround for TSE Network [Local – 02 ] | 10d | 2026-02-14 A | 2026-05-19 A | CON-LEG101-LR-1780, CON-LEG101-EN-3450 | 100% |  |
| CON-LEG101-LR-1780 |  | Concrete encasement, pipe dia 110 mm [Local – 02 ] | 2d | 2026-03-15 A | 2026-05-18 A | CON-LEG101-LR-1670, CON-LEG101-EN-3450, CON-LEG101-PR-1430 | 100% |  |
| CON-LEG101-LR-2000 |  | Installation of Micron Marker Magnetic Tape [Local – 02 ] | 4d | 2026-03-16 A | 2026-05-20 A | CON-LEG101-LR-1880 | 100% |  |
| CON-LEG101-LR-2110 |  | Backfilling to Subgrade Elevation [Local – 02 ] | 19d | 2026-03-17 A | 2026-05-21 A | CON-LEG101-LR-2000, CON-LEG101-EN-3440 | 100% |  |
| CON-LEG101-LR-1670 |  | Testing for TSE Network [Local – 02 ] | 10d | 2026-03-18 A | 2026-05-21 A | CON-LEG101-LR-1560 | 100% |  |
|  | 1 | **Valves/Chamber** |  | 2026-04-29 | 2026-12-01 |  |  |  |
| CON-LEG101-LR-2220 |  | Installation of Gate (Sluice) valves (Direct buried) [Local – 02 ] | 13d | 2026-04-29 A | 2026-08-05 A | CON-LEG101-LR-2710, CON-LEG101-LR-1560, CON-LEG101-PR-1970 | 100% |  |
| CON-LEG101-LR-2410 |  | Installation of Wash out Valves [Local – 02 ] | 15d | 2026-04-29 A | 2026-12-01 | CON-LEG101-LR-2710, CON-LEG101-PR-1970 | 95% | 52.6d |
| CON-LEG101-LR-2710 |  | Installation of Wash out chambers [Local – 02 ] | 21d | 2026-04-29 A | 2026-12-01 | CON-LEG101-LR-1560, CON-LEG101-PR-1970 | 95% | 52.6d |
| CON-LEG101-LR-2490 |  | Installation of Fire Hydrant [Local – 02 ] | 10d | 2026-05-20 A | 2026-10-04 A | CON-LEG101-LR-2410, CON-LEG101-PR-2470, CON-LEG101-LR-2480 SS | 100% |  |
|  | 6 | **Public Water Utility Distribution** |  | 2026-02-04 | 2026-12-02 |  |  |  |
|  | 2 | **Pipe Work** |  | 2026-02-04 | 2026-05-18 |  |  |  |
| CON-LEG101-LR-10070 |  | Excavation for Public Water Utility Distribution Piping [Local – 02 ] | 12d | 2026-02-04 A | 2026-02-15 A | CON-LEG101-LR-4230, CON-LEG101-LR-11170, CON-LEG101-LR-3440, CON-LEG101-LR-3530, CON-LEG101-LR-1330, CON-LEG101-EN-1690, CON-LEG101-EN-1700, CON-LEG101-EN-1710, CON-LEG101-EN-3440 | 100% |  |
| CON-LEG101-LR-10170 |  | Granular bedding for Public Water Utility Distribution Piping [Local – 02 ] | 9d | 2026-02-05 A | 2026-04-22 A | CON-LEG101-LR-10070 | 100% |  |
| CON-LEG101-LR-10270 |  | Installation of Pipe for Public Water Utility Distribution Piping [Local – 02 ] | 13d | 2026-02-05 A | 2026-04-23 A | CON-LEG101-PR-4010, CON-LEG101-LR-10170, CON-LEG101-PR-1660 | 100% |  |
| CON-LEG101-LR-10570 |  | Granular Surround for Public Water Utility Distribution Piping [Local – 02 ] | 9d | 2026-02-14 A | 2026-05-16 A | CON-LEG101-LR-10470, CON-LEG101-EN-3450 | 100% |  |
| CON-LEG101-LR-10470 |  | Concrete encasement, pipe dia 110 mm [Local – 02 ] | 2d | 2026-03-15 A | 2026-05-16 A | CON-LEG101-LR-10370, CON-LEG101-EN-3450, CON-LEG101-PR-1430 | 100% |  |
| CON-LEG101-LR-10670 |  | Installation of Micron Marker Magnetic Tape [Local – 02 ] | 3d | 2026-03-16 A | 2026-05-17 A | CON-LEG101-LR-10570 | 100% |  |
| CON-LEG101-LR-10770 |  | Backfilling to Subgrade Elevation [Local – 02 ] | 8d | 2026-03-17 A | 2026-05-18 A | CON-LEG101-LR-10670, CON-LEG101-EN-3440 | 100% |  |
| CON-LEG101-LR-10370 |  | Testing for Public Water Utility Distribution Piping [Local – 02 ] | 9d | 2026-05-13 A | 2026-05-14 A | CON-LEG101-LR-10270 | 100% |  |
|  | 1 | **Valves/Chamber** |  | 2026-04-01 | 2026-12-02 |  |  |  |
| CON-LEG101-LR-15080 |  | Installation of Air Valve chambers [Local – 02 ] | 20d | 2026-04-01 A | 2026-12-01 | CON-LEG101-LR-15070 | 95% | 79.15d |
| CON-LEG101-LR-1030 |  | Installation of Gate (Sluice) valves (Direct buried) [Local – 02 ] | 7d | 2026-04-29 A | 2026-12-02 | CON-LEG101-LR-15100, CON-LEG101-LR-15080, CON-LEG101-LR-10270, CON-LEG101-PR-1960 | 95% | 79.15d |
| CON-LEG101-LR-15070 |  | Installation of Wash out chambers [Local – 02 ] | 20d | 2026-04-29 A | 2026-11-30 | CON-LEG101-LR-10270 | 95% | 53.4d |
| CON-LEG101-LR-15090 |  | Installation of Wash-out Valves [Local – 02 ] | 8d | 2026-04-29 A | 2026-08-05 A | CON-LEG101-LR-15070, CON-LEG101-LR-2410, CON-LEG101-LR-2220 | 100% |  |
| CON-LEG101-LR-15100 |  | Installation of Air Valves [Local – 02 ] | 8d | 2026-04-29 A | 2026-08-06 A | CON-LEG101-LR-15090 | 100% |  |
|  | 1 | **Electrical Works** |  | 2026-05-31 | 2027-07-25 |  |  |  |
|  | 3 | **Low Voltage** |  | 2026-05-31 | 2027-07-25 |  |  |  |
| CON-LEG101-LR-8010 |  | Installation of Low Voltage Cables Duct Banks [Local – 02 ] | 6d | 2026-05-31 A | 2026-06-11 A | CON-LEG101-LR-7810, CON-LEG101-PR-1320, CON-LEG101-LR-1030 | 100% |  |
| CON-LEG101-LR-7810 |  | Excavation works for Low Voltage Cables [Local – 02 ] | 16d | 2026-07-21 A | 2026-07-25 A | CON-LEG101-LR-11170, CON-LEG101-LR-4230, CON-LEG101-LR-3440, CON-LEG101-LR-3530, CON-LEG101-LR-2110, CON-LEG101-LR-10770, CON-LEG101-LR-6910, CON-LEG101-EN-1680, CON-LEG101-EN-3440 | 100% |  |
| CON-LEG101-LR-7910 |  | Installation of Low Voltage Cables [Local – 02 ] | 14d | 2026-07-24 A | 2026-08-01 A | CON-LEG101-LR-8010, CON-LEG101-LR-7810, CON-LEG101-PR-1900 | 100% |  |
| CON-LEG101-LR-8490 |  | Installation of Low Voltage Distribution Panel [Local – 02 ] | 10d | 2027-07-04 | 2027-07-14 | CON-LEG101-LR-7910, CON-LEG101-LR-8010, CON-LEG101-PR-2550 |  | -80.5d |
| CON-LEG101-LR-8540 |  | Installation of KWH Meters Walls [Local – 02 ] | 7d | 2027-07-15 | 2027-07-22 | CON-LEG101-LR-8490, CON-LEG101-PR-1930, CON-LEG101-LR-9960 |  | 24.6d |
| CON-LEG101-LR-8790 |  | Installation of Earthing System [Local – 02 ] | 2d | 2027-07-24 | 2027-07-25 | CON-LEG101-LR-8540, CON-LEG101-PR-1320, CON-LEG101-PR-1480, CON-LEG101-PR-1310 |  | 24.6d |
|  | 10 | **Telecommunications** |  | 2026-05-31 | 2026-10-08 |  |  |  |
| CON-LEG101-LR-8860 |  | Installation of Sand and soil encased duct banks for primary network [Local – 02 ] | 18d | 2026-05-31 A | 2026-07-01 A | CON-LEG101-LR-7810, CON-LEG101-EN-3280, CON-LEG101-EN-3440 | 100% |  |
| CON-LEG101-LR-9260 |  | Installation of Concrete encased duct banks for for combined network of primary and secondary [Local – 02 ] | 7d | 2026-05-31 A | 2026-06-13 A | CON-LEG101-PR-3250, CON-LEG101-LR-9160, CON-LEG101-PR-1430 | 100% |  |
| CON-LEG101-LR-9360 |  | Installation of Reinforced concrete manhole [Local – 02 ] | 21d | 2026-05-31 A | 2026-07-01 A | CON-LEG101-LR-9260, CON-LEG101-PR-3260 | 100% |  |
| CON-LEG101-LR-8960 |  | Installation of Concrete encased duct banks for primary network [Local – 02 ] | 8d | 2026-08-25 A | 2026-10-08 A | CON-LEG101-PR-3180, CON-LEG101-PR-4020, CON-LEG101-LR-8860, CON-LEG101-PR-1430 | 100% |  |
| CON-LEG101-LR-9060 |  | Installation of Sand encased duct banks for secondary network [Local – 02 ] | 10d | 2026-08-25 A | 2026-10-08 A | CON-LEG101-LR-8960, CON-LEG101-EN-3440 | 100% |  |
| CON-LEG101-LR-9160 |  | Installation of Sand and soil encased duct banks, for combined network of primary and secondary [Local – 02 ] | 16d | 2026-08-25 A | 2026-10-08 A | CON-LEG101-LR-9060, CON-LEG101-EN-3440, CON-LEG101-LR-8490 | 100% |  |
|  | 11 | **CCTV feeding system and GSM** |  | 2026-06-01 | 2027-07-11 |  |  |  |
| CON-LEG101-LR-9890 |  | Installation of 25 Meters pole for CCTV Cameras [Local – 02 ] | 7d | 2026-06-01 A | 2026-07-16 A | CON-LEG101-LR-9800, CON-LEG101-PR-3870 | 100% |  |
| CON-LEG101-LR-8580 |  | Excavation works for Low Voltage Cables for CCTV feeding system and GSM [Local – 02 ] | 10d | 2026-07-11 A | 2026-09-13 A | CON-LEG101-LR-8860, CON-LEG101-EN-3290, CON-LEG101-EN-3440 | 100% |  |
| CON-LEG101-LR-8650 |  | Installation of Low Voltage Cables for CCTV feeding system and GSM [Local – 02 ] | 7d | 2026-07-11 A | 2026-09-14 A | CON-LEG101-LR-8580, CON-LEG101-PR-1900 | 100% |  |
| CON-LEG101-LR-9470 |  | Installation of 8POE ports Industrial Switches for remote poles [Local – 02 ] | 7d | 2026-07-11 A | 2026-09-14 A | CON-LEG101-LR-8650, CON-LEG101-PR-3410 | 100% |  |
| CON-LEG101-LR-9570 |  | Installation of Server [Local – 02 ] | 7d | 2026-07-11 A | 2026-09-14 A | CON-LEG101-LR-9470, CON-LEG101-PR-3530 | 100% |  |
| CON-LEG101-LR-9640 |  | Installation of IP Outdoor CCTV POE Camera,5 MP, Metal Housing [Local – 02 ] | 7d | 2026-07-11 A | 2026-09-14 A | CON-LEG101-LR-9570, CON-LEG101-PR-3610 | 100% |  |
| CON-LEG101-LR-9720 |  | Installation of Outdoor PTZ IP66 [Local – 02 ] | 2d | 2026-07-11 A | 2026-09-14 A | CON-LEG101-LR-9640, CON-LEG101-PR-3650 | 100% |  |
| CON-LEG101-LR-9970 |  | Installation of Short Range wireless point to point wireless bridge [Local – 02 ] | 7d | 2026-07-11 A | 2026-09-14 A | CON-LEG101-LR-9890, CON-LEG101-PR-3910 | 100% |  |
| CON-LEG101-LR-9800 |  | Installation of LED Screen 43" (24/7 operation) with Ethernet decoders [Local – 02 ] | 7d | 2027-07-04 | 2027-07-11 | CON-LEG101-PR-3950, CON-LEG101-LR-9720, CON-LEG101-PR-3290 |  | -77.5d |
|  | 12 | **Earthing System** |  | 2027-07-19 | 2027-07-25 |  |  |  |
| CON-LEG101-LR-8310 |  | Installation of Earthing for Distribution panels,SL feeder pillars, KWH, Unit substations and RMU [Local – 02 ] | 6d | 2027-07-19 | 2027-07-25 | CON-LEG101-LR-9360, CON-LEG101-LR-7510, CON-LEG101-LR-7430, CON-LEG101-LR-8460, CON-LEG101-LR-8110, CON-LEG101-PR-1480, CON-LEG101-LR-9970, CON-LEG101-PR-1310, CON-LEG101-LR-8360 SS |  | -83.5d |
|  | 9 | **Road Lighting** |  | 2026-03-15 | 2027-07-21 |  |  |  |
| CON-LEG101-LR-8110 |  | Installation of Lighting poles [Local – 02 ] | 7d | 2026-03-15 A | 2026-08-17 A | CON-LEG101-PR-1950, CON-LEG101-LR-7810, CON-LEG101-LR-8100 SS, CON-LEG101-PR-1910 | 100% |  |
| CON-LEG101-LR-8210 |  | Installation of Street Lighting Luminaire [Local – 02 ] | 7d | 2026-07-05 A | 2026-08-17 A | CON-LEG101-LR-8110, CON-LEG101-PR-1920 | 100% |  |
| CON-LEG101-LR-8460 |  | Installation of Street Lighting feeder pillars / Lighting panels [Local – 02 ] | 7d | 2026-07-08 A | 2026-10-28 A | CON-LEG101-LR-7510, CON-LEG101-PR-1940, CON-LEG101-PR-2550 | 100% |  |
| CON-LEG101-LR-8360 |  | Installation of Earthing for Streetlighting feeders for every end pole circuits. [Local – 02 ] | 5d | 2026-08-08 A | 2027-07-21 | CON-LEG101-LR-7510, CON-LEG101-LR-7430, CON-LEG101-LR-8460, CON-LEG101-PR-1480, CON-LEG101-LR-8210, CON-LEG101-PR-1310, CON-LEG101-LR-8350 | 50% | -83.5d |
| CON-LEG101-LR-7430 |  | Installation of Unit Substation Including concrete foundations and fencing [Local – 02 ] | 7d | 2027-06-05 | 2027-06-12 | CON-LEG101-LR-8110, CON-LEG101-EN-3310, CON-LEG101-EN-3320, CON-LEG101-EN-3330, CON-LEG101-EN-3360, CON-LEG101-PR-1890 |  | -65.5d |
| CON-LEG101-LR-7510 |  | Installation of Ring Main Unit RMU [Local – 02 ] | 13d | 2027-07-04 | 2027-07-18 | CON-LEG101-LR-8110, CON-LEG101-LR-7430, CON-LEG101-PR-2510, CON-LEG101-LR-8210 |  | -83.5d |
|  | 3 | **Local – 03** |  | 2026-02-05 | 2027-08-12 |  |  |  |
|  | 5 | **TSE Network** |  | 2026-02-05 | 2026-12-03 |  |  |  |
|  | 2 | **Pipe Work** |  | 2026-02-05 | 2026-06-30 |  |  |  |
| CON-LEG101-LR-1340 |  | Excavation for TSE Network [Local – 03 ] | 6d | 2026-02-05 A | 2026-02-16 A | CON-LEG101-LR-11270, CON-LEG101-LR-4240, CON-LEG101-LR-3530, CON-LEG101-LR-3440, CON-LEG101-LR-3620, CON-LEG101-EN-1720, CON-LEG101-EN-1730, CON-LEG101-EN-1740, CON-LEG101-EN-1810 | 100% |  |
| CON-LEG101-LR-1460 |  | Granular bedding for TSE Network [Local – 03 ] | 7d | 2026-02-15 A | 2026-03-03 A | CON-LEG101-LR-1340 | 100% |  |
| CON-LEG101-LR-1570 |  | Installation of Pipe for TSE Network [Local – 03 ] | 13d | 2026-02-18 A | 2026-04-15 A | CON-LEG101-PR-2590, CON-LEG101-LR-1460, CON-LEG101-PR-1690 | 100% |  |
| CON-LEG101-LR-1890 |  | Granular Surround for TSE Network [Local – 03 ] | 7d | 2026-02-25 A | 2026-04-30 A | CON-LEG101-LR-1790, CON-LEG101-EN-3450 | 100% |  |
| CON-LEG101-LR-1680 |  | Testing for TSE Network [Local – 03 ] | 7d | 2026-04-29 A | 2026-04-29 A | CON-LEG101-LR-1570 | 100% |  |

| ID | WBS | Task | Duration | Start | Finish | Predecessors | Complete | Total float |
| --- | --- | --- | --- | --- | --- | --- | --- | --- |
| CON-LEG101-LR-1790 |  | Concrete encasement, pipe dia 110 mm [Local – 03 ] | 3d | 2026-04-30 A | 2026-04-30 A | CON-LEG101-LR-1680, CON-LEG101-EN-3450, CON-LEG101-PR-1430 | 100% |  |
| CON-LEG101-LR-2010 |  | Installation of Micron Marker Magnetic Tape [Local – 03 ] | 3d | 2026-05-02 A | 2026-05-02 A | CON-LEG101-LR-1890 | 100% |  |
| CON-LEG101-LR-2120 |  | Backfilling to Subgrade Elevation [Local – 03 ] | 6d | 2026-05-03 A | 2026-06-30 A | CON-LEG101-LR-2010, CON-LEG101-EN-3440 | 100% |  |
|  | 1 | **Valves/Chamber** |  | 2026-04-15 | 2026-12-03 |  |  |  |
| CON-LEG101-LR-2230 |  | Installation of Gate (Sluice) valves (Direct buried) [Local – 03 ] | 15d | 2026-04-15 A | 2026-08-05 A | CON-LEG101-LR-2640, CON-LEG101-LR-2720, CON-LEG101-LR-1570, CON-LEG101-PR-1970, CON-LEG101-LR-1030 | 100% |  |
| CON-LEG101-LR-2340 |  | Installation of Wash-out Valves [Local – 03 ] | 15d | 2026-04-15 A | 2026-08-05 A | CON-LEG101-LR-2230, CON-LEG101-PR-1970 | 100% |  |
| CON-LEG101-LR-2420 |  | Installation of Air Valves [Local – 03 ] | 15d | 2026-04-15 A | 2026-08-05 A | CON-LEG101-LR-2340, CON-LEG101-PR-1970 | 100% |  |
| CON-LEG101-LR-2500 |  | Installation of Fire Hydrant [Local – 03 ] | 15d | 2026-04-15 A | 2026-10-05 A | CON-LEG101-LR-2120, CON-LEG101-LR-2420, CON-LEG101-PR-2470, CON-LEG101-LR-2490 SS | 100% |  |
| CON-LEG101-LR-2720 |  | Installation of Air Valve chambers [Local – 03 ] | 21d | 2026-04-15 A | 2026-12-03 | CON-LEG101-LR-2640, CON-LEG101-PR-1970 | 95% | 52.6d |
| CON-LEG101-LR-2640 |  | Installation of Wash out chambers [Local – 03 ] | 21d | 2026-04-29 A | 2026-12-02 | CON-LEG101-LR-1570, CON-LEG101-PR-1970, CON-LEG101-LR-2710, CON-LEG101-LR-15090 | 95% | 52.6d |
|  | 6 | **Public Water Utility Distribution** |  | 2026-02-05 | 2026-12-05 |  |  |  |
|  | 2 | **Pipe Work** |  | 2026-02-05 | 2026-06-30 |  |  |  |
| CON-LEG101-LR-10080 |  | Excavation for Public Water Utility Distribution Piping [Local – 03 ] | 10d | 2026-02-05 A | 2026-02-16 A | CON-LEG101-LR-3530, CON-LEG101-LR-3440, CON-LEG101-LR-1340, CON-LEG101-EN-1690, CON-LEG101-EN-1700, CON-LEG101-EN-1710, CON-LEG101-EN-3440, CON-LEG101-LR-1890 | 100% |  |
| CON-LEG101-LR-10180 |  | Granular bedding for Public Water Utility Distribution Piping [Local – 03 ] | 7d | 2026-02-15 A | 2026-03-03 A | CON-LEG101-LR-10080 | 100% |  |
| CON-LEG101-LR-10280 |  | Installation of Pipe for Public Water Utility Distribution Piping [Local – 03 ] | 12d | 2026-02-18 A | 2026-03-14 A | CON-LEG101-PR-4010, CON-LEG101-LR-10180, CON-LEG101-PR-1660 | 100% |  |
| CON-LEG101-LR-10580 |  | Granular Surround for Public Water Utility Distribution Piping [Local – 03 ] | 7d | 2026-02-25 A | 2026-04-30 A | CON-LEG101-LR-10480, CON-LEG101-EN-3450 | 100% |  |
| CON-LEG101-LR-10380 |  | Testing for Public Water Utility Distribution Piping [Local – 03 ] | 7d | 2026-04-29 A | 2026-04-29 A | CON-LEG101-LR-10280 | 100% |  |
| CON-LEG101-LR-10480 |  | Concrete encasement, pipe dia 110 mm [Local – 03 ] | 3d | 2026-04-30 A | 2026-04-30 A | CON-LEG101-LR-10380, CON-LEG101-EN-3450, CON-LEG101-PR-1430 | 100% |  |
| CON-LEG101-LR-10680 |  | Installation of Micron Marker Magnetic Tape [Local – 03 ] | 3d | 2026-05-02 A | 2026-06-25 A | CON-LEG101-LR-10580 | 100% |  |
| CON-LEG101-LR-10780 |  | Backfilling to Subgrade Elevation [Local – 03 ] | 6d | 2026-05-03 A | 2026-06-30 A | CON-LEG101-LR-10680, CON-LEG101-EN-3440 | 100% |  |
|  | 1 | **Valves/Chamber** |  | 2026-04-15 | 2026-12-05 |  |  |  |
| CON-LEG101-LR-1040 |  | Installation of Gate (Sluice) valves (Direct buried) [Local – 03 ] | 8d | 2026-04-15 A | 2026-08-05 A | CON-LEG101-LR-10780, CON-LEG101-LR-15110, CON-LEG101-LR-15120, CON-LEG101-LR-10280, CON-LEG101-PR-1960 | 100% |  |
| CON-LEG101-LR-15110 |  | Installation of Air Valve chambers [Local – 03 ] | 20d | 2026-04-15 A | 2026-12-05 | CON-LEG101-LR-10280, CON-LEG101-LR-2720, CON-LEG101-LR-10780 | 95% | 52.6d |
| CON-LEG101-LR-15120 |  | Installation of Air Valves [Local – 03 ] | 8d | 2026-04-15 A | 2026-08-05 A | CON-LEG101-LR-15110 | 100% |  |
|  | 1 | **Electrical Works** |  | 2026-04-18 | 2027-06-28 |  |  |  |
|  | 3 | **Low Voltage** |  | 2026-04-18 | 2027-06-28 |  |  |  |
| CON-LEG101-LR-8020 |  | Installation of Low Voltage Cables Duct Banks [Local – 03 ] | 10d | 2026-04-18 A | 2026-05-07 A | CON-LEG101-LR-7820, CON-LEG101-PR-1320 | 100% |  |
| CON-LEG101-LR-7820 |  | Excavation works for Low Voltage Cables [Local – 03 ] | 12d | 2026-10-31 A | 2027-06-20 | CON-LEG101-LR-11270, CON-LEG101-LR-4240, CON-LEG101-LR-2120, CON-LEG101-LR-10780, CON-LEG101-LR-6920, CON-LEG101-EN-1680, CON-LEG101-EN-3440 | 70% | -73d |
| CON-LEG101-LR-7920 |  | Installation of Low Voltage Cables [Local – 03 ] | 12d | 2026-11-01 A | 2027-06-24 | CON-LEG101-LR-8020, CON-LEG101-LR-7820, CON-LEG101-PR-1900 | 70% | -72.8d |
| CON-LEG101-LR-8800 |  | Installation of Earthing System [Local – 03 ] | 3d | 2027-06-24 | 2027-06-28 | CON-LEG101-LR-8020, CON-LEG101-PR-1320, CON-LEG101-LR-7920, CON-LEG101-PR-1480, CON-LEG101-PR-1310 |  | -72.8d |
|  | 10 | **Telecommunications** |  | 2026-04-15 | 2027-07-13 |  |  |  |
| CON-LEG101-LR-9370 |  | Installation of Reinforced concrete manhole [Local – 03 ] | 21d | 2026-04-15 A | 2026-07-02 A | CON-LEG101-LR-9270, CON-LEG101-PR-3260 | 100% |  |
| CON-LEG101-LR-8870 |  | Installation of Sand and soil encased duct banks for primary network [Local – 03 ] | 17d | 2026-04-21 A | 2027-06-28 | CON-LEG101-LR-7820, CON-LEG101-EN-3280, CON-LEG101-EN-3440 | 60% | -73d |
| CON-LEG101-LR-8970 |  | Installation of Concrete encased duct banks for primary network [Local – 03 ] | 6d | 2026-04-22 A | 2026-05-10 A | CON-LEG101-PR-3180, CON-LEG101-PR-4020, CON-LEG101-LR-8870, CON-LEG101-PR-1430, CON-LEG101-LR-8800 | 100% |  |
| CON-LEG101-LR-9070 |  | Installation of Sand encased duct banks for secondary network [Local – 03 ] | 7d | 2026-10-15 A | 2027-07-01 | CON-LEG101-LR-8970, CON-LEG101-EN-3440 | 60% | -73d |
| CON-LEG101-LR-9170 |  | Installation of Sand and soil encased duct banks, for combined network of primary and secondary [Local – 03 ] | 17d | 2026-10-15 A | 2027-07-08 | CON-LEG101-LR-9070, CON-LEG101-EN-3440 | 60% | -73d |
| CON-LEG101-LR-9270 |  | Installation of Concrete encased duct banks for for combined network of primary and secondary [Local – 03 ] | 5d | 2026-10-15 A | 2027-07-13 | CON-LEG101-PR-3250, CON-LEG101-LR-9170, CON-LEG101-PR-1430 | 30% | -73d |
|  | 11 | **CCTV feeding system and GSM** |  | 2026-05-23 | 2026-09-20 |  |  |  |
| CON-LEG101-LR-9900 |  | Installation of 25 Meters pole for CCTV Cameras [Local – 03 ] | 10d | 2026-05-23 A | 2026-07-08 A | CON-LEG101-LR-9730, CON-LEG101-PR-3870 | 100% |  |
| CON-LEG101-LR-9980 |  | Installation of Short Range wireless point to point wireless bridge [Local – 03 ] | 10d | 2026-05-23 A | 2026-09-20 A | CON-LEG101-LR-9900, CON-LEG101-PR-3910 | 100% |  |
| CON-LEG101-LR-8590 |  | Excavation works for Low Voltage Cables for CCTV feeding system and GSM [Local – 03 ] | 10d | 2026-07-13 A | 2026-09-20 A | CON-LEG101-LR-8870, CON-LEG101-EN-3290, CON-LEG101-EN-3440, CON-LEG101-LR-9070 | 100% |  |
| CON-LEG101-LR-8660 |  | Installation of Low Voltage Cables for CCTV feeding system and GSM [Local – 03 ] | 12d | 2026-07-13 A | 2026-09-20 A | CON-LEG101-LR-8590, CON-LEG101-PR-1900 | 100% |  |
| CON-LEG101-LR-9480 |  | Installation of 8POE ports Industrial Switches for remote poles [Local – 03 ] | 8d | 2026-07-13 A | 2026-09-20 A | CON-LEG101-LR-8660, CON-LEG101-PR-3410 | 100% |  |
| CON-LEG101-LR-9650 |  | Installation of IP Outdoor CCTV POE Camera,5 MP, Metal Housing [Local – 03 ] | 5d | 2026-07-13 A | 2026-09-20 A | CON-LEG101-LR-9480, CON-LEG101-PR-3610 | 100% |  |
| CON-LEG101-LR-9730 |  | Installation of Outdoor PTZ IP66 [Local – 03 ] | 8d | 2026-07-13 A | 2026-09-20 A | CON-LEG101-LR-9650, CON-LEG101-PR-3650 | 100% |  |
|  | 12 | **Earthing System** |  | 2027-08-04 | 2027-08-12 |  |  |  |
| CON-LEG101-LR-15170 |  | Installation of Earthing for Distribution panels,SL feeder pillars, KWH, Unit substations and RMU [Local – 03 ] | 7d | 2027-08-04 | 2027-08-12 | CON-LEG101-LR-7520, CON-LEG101-LR-7440, CON-LEG101-LR-9980, CON-LEG101-LR-9900, CON-LEG101-LR-9730, CON-LEG101-LR-8370 |  | 1.4d |
|  | 9 | **Road Lighting** |  | 2026-04-18 | 2027-08-04 |  |  |  |
| CON-LEG101-LR-8120 |  | Installation of Lighting poles [Local – 03 ] | 15d | 2026-04-18 A | 2027-06-22 | CON-LEG101-PR-1950, CON-LEG101-LR-7820, CON-LEG101-LR-8110, CON-LEG101-PR-1910 | 90% | -72.6d |
| CON-LEG101-LR-7440 |  | Installation of Unit Substation Including concrete foundations and fencing [Local – 03 ] | 10d | 2026-07-11 A | 2027-07-11 | CON-LEG101-LR-8120, CON-LEG101-LR-8590, CON-LEG101-EN-3310, CON-LEG101-EN-3320, CON-LEG101-EN-3330, CON-LEG101-EN-3360, CON-LEG101-PR-1890, CON-LEG101-LR-8220 | 20% | 1.4d |
| CON-LEG101-LR-8220 |  | Installation of Street Lighting Luminaire [Local – 03 ] | 7d | 2026-10-14 A | 2027-06-22 | CON-LEG101-LR-8120, CON-LEG101-PR-1920 | 90% | 8.8d |
| CON-LEG101-LR-7520 |  | Installation of Ring Main Unit RMU [Local – 03 ] | 15d | 2027-07-11 | 2027-07-28 | CON-LEG101-LR-7440, CON-LEG101-PR-2510 |  | 1.4d |
| CON-LEG101-LR-8370 |  | Installation of Earthing for Streetlighting feeders for every end pole circuits. [Local – 03 ] | 6d | 2027-07-28 | 2027-08-04 | CON-LEG101-LR-7520, CON-LEG101-LR-7440, CON-LEG101-PR-1480, CON-LEG101-LR-8220, CON-LEG101-PR-1310 |  | 1.4d |
|  | 4 | **Local – 04** |  | 2026-02-01 | 2027-10-24 |  |  |  |
|  | 5 | **TSE Network** |  | 2026-02-01 | 2027-05-23 |  |  |  |
|  | 2 | **Pipe Work** |  | 2026-02-01 | 2027-02-07 |  |  |  |
| CON-LEG101-LR-1350 |  | Excavation for TSE Network [Local – 04 ] | 12d | 2026-02-01 A | 2027-01-07 | CON-LEG101-LR-3450, CON-LEG101-LR-3540, CON-LEG101-LR-11380, CON-LEG101-LR-4250, CON-LEG101-LR-2820, CON-LEG101-EN-1720, CON-LEG101-EN-1730, CON-LEG101-EN-1740, CON-LEG101-EN-1810 | 90% | -44.74d |
| CON-LEG101-LR-1470 |  | Granular bedding for TSE Network [Local – 04 ] | 6d | 2026-02-15 A | 2027-01-09 | CON-LEG101-LR-1350 | 80% | -44.74d |
| CON-LEG101-LR-1580 |  | Installation of Pipe for TSE Network [Local – 04 ] | 12d | 2026-02-17 A | 2027-01-16 | CON-LEG101-PR-2590, CON-LEG101-LR-1470, CON-LEG101-PR-1690 | 52% | -44.74d |
| CON-LEG101-LR-1910 |  | Granular Surround for TSE Network [Local – 04 ] | 6d | 2026-02-18 A | 2027-01-30 | CON-LEG101-LR-1810, CON-LEG101-EN-3450 | 52% | -44.74d |
| CON-LEG101-LR-2020 |  | Installation of Micron Marker Magnetic Tape [Local – 04 ] | 3d | 2026-03-11 A | 2027-01-31 | CON-LEG101-LR-1910 | 52% | -44.74d |
| CON-LEG101-LR-2130 |  | Backfilling to Subgrade Elevation [Local – 04 ] | 12d | 2026-03-14 A | 2027-02-07 | CON-LEG101-LR-2020, CON-LEG101-EN-3440 | 52% | -44.74d |
| CON-LEG101-LR-1690 |  | Testing for TSE Network [Local – 04 ] | 6d | 2027-01-16 | 2027-01-23 | CON-LEG101-LR-1580 |  | -44.74d |
| CON-LEG101-LR-1810 |  | Concrete encasement, pipe dia 110 mm [Local – 04 ] | 3d | 2027-01-23 | 2027-01-26 | CON-LEG101-LR-1690, CON-LEG101-EN-3450, CON-LEG101-PR-1430 |  | -44.74d |
|  | 1 | **Valves/Chamber** |  | 2027-01-31 | 2027-05-23 |  |  |  |
| CON-LEG101-LR-2730 |  | Installation of Air Valve chambers [Local – 04 ] | 21d | 2027-01-31 | 2027-03-02 | CON-LEG101-LR-1580, CON-LEG101-PR-1970, CON-LEG101-LR-2020 |  | -28.98d |
| CON-LEG101-LR-15060 |  | Installation of Wash-out Valve chambers [Local – 04 ] | 21d | 2027-03-02 | 2027-03-27 | CON-LEG101-LR-2730 |  | -28.98d |
| CON-LEG101-LR-2240 |  | Installation of Gate (Sluice) valves (Direct buried) [Local – 04 ] | 9d | 2027-03-02 | 2027-03-13 | CON-LEG101-LR-2730, CON-LEG101-LR-1580, CON-LEG101-PR-1970, CON-LEG101-LR-1040 |  | -16.98d |
| CON-LEG101-LR-2350 |  | Installation of Wash-out Valves [Local – 04 ] | 15d | 2027-03-27 | 2027-04-13 | CON-LEG101-LR-1580, CON-LEG101-LR-15060, CON-LEG101-LR-2240, CON-LEG101-PR-1970 |  | -28.98d |
| CON-LEG101-LR-2430 |  | Installation of Air Valves [Local – 04 ] | 15d | 2027-04-13 | 2027-05-01 | CON-LEG101-LR-2730, CON-LEG101-LR-2350, CON-LEG101-PR-1970, CON-LEG101-LR-2420 |  | -28.98d |

| ID | WBS | Task | Duration | Start | Finish | Predecessors | Complete | Total float |
| --- | --- | --- | --- | --- | --- | --- | --- | --- |
| CON-LEG101-LR-2510 |  | Installation of Fire Hydrant [Local – 04 ] | 15d | 2027-05-01 | 2027-05-23 | CON-LEG101-LR-2130, CON-LEG101-LR-2430, CON-LEG101-PR-2470 |  | -28.98d |
|  | 6 | **Public Water Utility Distribution** |  | 2026-02-01 | 2027-05-03 |  |  |  |
|  | 2 | **Pipe Work** |  | 2026-02-01 | 2027-02-07 |  |  |  |
| CON-LEG101-LR-10090 |  | Excavation for Public Water Utility Distribution Piping [Local – 04 ] | 10d | 2026-02-01 A | 2027-01-09 | CON-LEG101-LR-1350, CON-LEG101-EN-1690, CON-LEG101-EN-1700, CON-LEG101-EN-1710, CON-LEG101-EN-3440 | 90% | -44.7d |
| CON-LEG101-LR-10190 |  | Granular bedding for Public Water Utility Distribution Piping [Local – 04 ] | 5d | 2026-02-15 A | 2027-01-10 | CON-LEG101-LR-10090 | 80% | -44.7d |
| CON-LEG101-LR-10290 |  | Installation of Pipe for Public Water Utility Distribution Piping [Local – 04 ] | 10d | 2026-02-17 A | 2027-01-17 | CON-LEG101-PR-4010, CON-LEG101-LR-10190, CON-LEG101-PR-1660 | 40% | -44.7d |
| CON-LEG101-LR-10590 |  | Granular Surround for Public Water Utility Distribution Piping [Local – 04 ] | 5d | 2026-02-18 A | 2027-01-30 | CON-LEG101-LR-10490, CON-LEG101-EN-3450 | 40% | -44.7d |
| CON-LEG101-LR-10390 |  | Testing for Public Water Utility Distribution Piping [Local – 04 ] | 5d | 2027-01-17 | 2027-01-23 | CON-LEG101-LR-10290 |  | -44.7d |
| CON-LEG101-LR-10490 |  | Concrete encasement, pipe dia 110 mm [Local – 04 ] | 3d | 2027-01-23 | 2027-01-26 | CON-LEG101-LR-10390, CON-LEG101-EN-3450, CON-LEG101-PR-1430 |  | -44.7d |
| CON-LEG101-LR-10690 |  | Installation of Micron Marker Magnetic Tape [Local – 04 ] | 3d | 2027-01-30 | 2027-02-02 | CON-LEG101-LR-10590 |  | -44.7d |
| CON-LEG101-LR-10790 |  | Backfilling to Subgrade Elevation [Local – 04 ] | 4d | 2027-02-02 | 2027-02-07 | CON-LEG101-LR-10690, CON-LEG101-EN-3440 |  | -44.7d |
|  | 1 | **Valves/Chamber** |  | 2027-03-27 | 2027-05-03 |  |  |  |
| CON-LEG101-LR-1280 |  | Installation of Air Valve chambers [Local – 04 ] | 20d | 2027-03-27 | 2027-04-19 | CON-LEG101-LR-10290, CON-LEG101-PR-1960, CON-LEG101-LR-15060 |  | 64.92d |
| CON-LEG101-LR-1050 |  | Installation of Gate (Sluice) valves (Direct buried) [Local – 04 ] | 6d | 2027-04-19 | 2027-04-26 | CON-LEG101-LR-10790, CON-LEG101-LR-1280, CON-LEG101-LR-10290, CON-LEG101-PR-1960 |  | 64.92d |
| CON-LEG101-LR-1180 |  | Installation of Air Valves [Local – 04 ] | 6d | 2027-04-26 | 2027-05-03 | CON-LEG101-LR-1280, CON-LEG101-LR-1050, CON-LEG101-PR-1960 |  | 64.92d |
|  | 8 | **Electrical Works** |  | 2027-06-17 | 2027-08-01 |  |  |  |
|  | 3 | **Low Voltage** |  | 2027-06-17 | 2027-08-01 |  |  |  |
| CON-LEG101-LR-7830 |  | Excavation works for Low Voltage Cables [Local – 04 ] | 13d | 2027-06-17 | 2027-07-01 | CON-LEG101-LR-4250, CON-LEG101-LR-11380, CON-LEG101-LR-3450, CON-LEG101-LR-3540, CON-LEG101-LR-2130, CON-LEG101-LR-10790, CON-LEG101-LR-6930, CON-LEG101-EN-1680, CON-LEG101-EN-3440 |  | -147.5d |
| CON-LEG101-LR-8030 |  | Installation of Low Voltage Cables Duct Banks [Local – 04 ] | 10d | 2027-07-03 | 2027-07-13 | CON-LEG101-LR-7830, CON-LEG101-PR-1320 |  | -147.5d |
| CON-LEG101-LR-7930 |  | Installation of Low Voltage Cables [Local – 04 ] | 13d | 2027-07-14 | 2027-07-28 | CON-LEG101-LR-8030, CON-LEG101-LR-7830, CON-LEG101-PR-1900 |  | -86.5d |
| CON-LEG101-LR-8810 |  | Installation of Earthing System [Local – 04 ] | 3d | 2027-07-29 | 2027-08-01 | CON-LEG101-LR-8030, CON-LEG101-PR-1320, CON-LEG101-LR-7930, CON-LEG101-PR-1480, CON-LEG101-PR-1310 |  | -51.4d |
|  | 10 | **Telecommunications** |  | 2027-07-14 | 2027-10-09 |  |  |  |
| CON-LEG101-LR-8880 |  | Installation of Sand and soil encased duct banks for primary network [Local – 04 ] | 17d | 2027-07-14 | 2027-08-02 | CON-LEG101-LR-7830, CON-LEG101-EN-3280, CON-LEG101-EN-3440, CON-LEG101-LR-8030 |  | -147.5d |
| CON-LEG101-LR-8980 |  | Installation of Concrete encased duct banks for primary network [Local – 04 ] | 6d | 2027-08-03 | 2027-08-09 | CON-LEG101-PR-3180, CON-LEG101-PR-4020, CON-LEG101-LR-8880, CON-LEG101-PR-1430 |  | -147.5d |
| CON-LEG101-LR-9080 |  | Installation of Sand encased duct banks for secondary network [Local – 04 ] | 7d | 2027-08-10 | 2027-08-17 | CON-LEG101-LR-8980, CON-LEG101-EN-3440 |  | -147.5d |
| CON-LEG101-LR-9180 |  | Installation of Sand and soil encased duct banks, for combined network of primary and secondary [Local – 04 ] | 18d | 2027-08-18 | 2027-09-07 | CON-LEG101-LR-9080, CON-LEG101-EN-3440 |  | -147.5d |
| CON-LEG101-LR-9280 |  | Installation of Concrete encased duct banks for for combined network of primary and secondary [Local – 04 ] | 5d | 2027-09-08 | 2027-09-13 | CON-LEG101-PR-3250, CON-LEG101-LR-9180, CON-LEG101-PR-1430 |  | -147.5d |
| CON-LEG101-LR-9380 |  | Installation of Reinforced concrete manhole [Local – 04 ] | 21d | 2027-09-14 | 2027-10-09 | CON-LEG101-LR-9280, CON-LEG101-PR-3260 |  | -147.5d |
|  | 11 | **CCTV feeding system and GSM** |  | 2027-08-03 | 2027-10-14 |  |  |  |
| CON-LEG101-LR-8600 |  | Excavation works for Low Voltage Cables for CCTV feeding system and GSM [Local – 04 ] | 12d | 2027-08-03 | 2027-08-16 | CON-LEG101-LR-8880, CON-LEG101-EN-3290, CON-LEG101-EN-3440, CON-LEG101-LR-8810 |  | -52.4d |
| CON-LEG101-LR-8670 |  | Installation of Low Voltage Cables for CCTV feeding system and GSM [Local – 04 ] | 13d | 2027-08-17 | 2027-08-31 | CON-LEG101-LR-8600, CON-LEG101-PR-1900 |  | -52.4d |
| CON-LEG101-LR-9490 |  | Installation of 8POE ports Industrial Switches for remote poles [Local – 04 ] | 7d | 2027-09-01 | 2027-09-08 | CON-LEG101-LR-8670, CON-LEG101-PR-3410 |  | -52.4d |
| CON-LEG101-LR-9660 |  | Installation of IP Outdoor CCTV POE Camera,5 MP, Metal Housing [Local – 04 ] | 8d | 2027-09-09 | 2027-09-18 | CON-LEG101-LR-9490, CON-LEG101-PR-3610 |  | -52.4d |
| CON-LEG101-LR-9740 |  | Installation of Outdoor PTZ IP66 [Local – 04 ] | 10d | 2027-09-19 | 2027-09-30 | CON-LEG101-LR-9660, CON-LEG101-PR-3650 |  | -52.4d |
| CON-LEG101-LR-9990 |  | Installation of Short Range wireless point to point wireless bridge [Local – 04 ] | 12d | 2027-10-02 | 2027-10-14 | CON-LEG101-LR-9740, CON-LEG101-PR-3910 |  | -52.4d |
|  | 12 | **Earthing System** |  | 2027-10-16 | 2027-10-24 |  |  |  |
| CON-LEG101-LR-15160 |  | Installation of Earthing for Distribution panels,SL feeder pillars, KWH, Unit substations and RMU [Local – 04 ] | 8d | 2027-10-16 | 2027-10-24 | CON-LEG101-LR-7450, CON-LEG101-LR-7530, CON-LEG101-LR-9990, CON-LEG101-LR-9740, CON-LEG101-LR-9660, CON-LEG101-LR-15170, CON-LEG101-LR-8380 |  | -52.4d |
|  | 9 | **Road Lighting** |  | 2027-07-03 | 2027-09-16 |  |  |  |
| CON-LEG101-LR-8130 |  | Installation of Lighting poles [Local – 04 ] | 18d | 2027-07-03 | 2027-07-22 | CON-LEG101-PR-1950, CON-LEG101-LR-7830, CON-LEG101-LR-8120, CON-LEG101-PR-1910 |  | -81.5d |
| CON-LEG101-LR-8230 |  | Installation of Street Lighting Luminaire [Local – 04 ] | 6d | 2027-07-24 | 2027-07-29 | CON-LEG101-LR-8130, CON-LEG101-PR-1920 |  | -14.4d |
| CON-LEG101-LR-7450 |  | Installation of Unit Substation Including concrete foundations and fencing [Local – 04 ] | 7d | 2027-08-17 | 2027-08-24 | CON-LEG101-LR-8130, CON-LEG101-LR-8600, CON-LEG101-EN-3310, CON-LEG101-EN-3320, CON-LEG101-EN-3330, CON-LEG101-EN-3360, CON-LEG101-PR-1890, CON-LEG101-LR-8230 |  | -29.4d |
| CON-LEG101-LR-7530 |  | Installation of Ring Main Unit RMU [Local – 04 ] | 14d | 2027-08-25 | 2027-09-09 | CON-LEG101-LR-8130, CON-LEG101-LR-7450, CON-LEG101-PR-2510 |  | -29.4d |
| CON-LEG101-LR-8380 |  | Installation of Earthing for Streetlighting feeders for every end pole circuits. [Local – 04 ] | 6d | 2027-09-11 | 2027-09-16 | CON-LEG101-LR-7450, CON-LEG101-LR-7530, CON-LEG101-PR-1480, CON-LEG101-LR-8230, CON-LEG101-PR-1310 |  | -29.4d |
|  | 5 | **Local – 05** |  | 2026-03-15 | 2027-08-09 |  |  |  |
|  | 5 | **TSE Network** |  | 2026-03-24 | 2026-12-19 |  |  |  |
|  | 2 | **Pipe Work** |  | 2026-03-24 | 2026-06-23 |  |  |  |
| CON-LEG101-LR-1370 |  | Excavation for TSE Network [Local – 05 ] | 12d | 2026-03-24 A | 2026-04-16 A | CON-LEG101-LR-3460, CON-LEG101-LR-3550, CON-LEG101-LR-11470, CON-LEG101-LR-4260, CON-LEG101-LR-2830, CON-LEG101-EN-1720, CON-LEG101-EN-1730, CON-LEG101-EN-1740, CON-LEG101-EN-1810 | 100% |  |
| CON-LEG101-LR-1480 |  | Granular bedding for TSE Network [Local – 05 ] | 9d | 2026-03-30 A | 2026-04-18 A | CON-LEG101-LR-1370 | 100% |  |
| CON-LEG101-LR-1590 |  | Installation of Pipe for TSE Network [Local – 05 ] | 15d | 2026-04-01 A | 2026-04-20 A | CON-LEG101-PR-2590, CON-LEG101-LR-1480, CON-LEG101-PR-1690 | 100% |  |
| CON-LEG101-LR-1700 |  | Testing for TSE Network [Local – 05 ] | 9d | 2026-04-27 A | 2026-04-28 A | CON-LEG101-LR-1590 | 100% |  |
| CON-LEG101-LR-1820 |  | Concrete encasement, pipe dia 110 mm [Local – 05 ] | 2d | 2026-04-29 A | 2026-06-20 A | CON-LEG101-LR-1700, CON-LEG101-EN-3450, CON-LEG101-PR-1430 | 100% |  |
| CON-LEG101-LR-1920 |  | Granular Surround for TSE Network [Local – 05 ] | 9d | 2026-04-30 A | 2026-06-21 A | CON-LEG101-LR-1820, CON-LEG101-EN-3450 | 100% |  |
| CON-LEG101-LR-2030 |  | Installation of Micron Marker Magnetic Tape [Local – 05 ] | 4d | 2026-05-02 A | 2026-06-22 A | CON-LEG101-LR-1920 | 100% |  |
| CON-LEG101-LR-2140 |  | Backfilling to Subgrade Elevation [Local – 05 ] | 18d | 2026-05-03 A | 2026-06-23 A | CON-LEG101-LR-2030, CON-LEG101-EN-3440 | 100% |  |
|  | 1 | **Valves/Chamber** |  | 2026-04-04 | 2026-12-19 |  |  |  |
| CON-LEG101-LR-2740 |  | Installation of Air Valve chambers [Local – 05 ] | 21d | 2026-04-04 A | 2026-12-19 | CON-LEG101-LR-1590, CON-LEG101-LR-2660, CON-LEG101-PR-1970 | 97% | 176.24d |
| CON-LEG101-LR-2250 |  | Installation of Gate (Sluice) valves (Direct buried) [Local – 05 ] | 14d | 2026-04-25 A | 2026-08-08 A | CON-LEG101-LR-2740, CON-LEG101-LR-1590, CON-LEG101-PR-1970, CON-LEG101-LR-1180 | 100% |  |
| CON-LEG101-LR-2360 |  | Installation of Wash-out Valves [Local – 05 ] | 14d | 2026-04-25 A | 2026-08-08 A | CON-LEG101-LR-2660, CON-LEG101-LR-2250, CON-LEG101-PR-1970 | 100% |  |
| CON-LEG101-LR-2440 |  | Installation of Air Valves [Local – 05 ] | 14d | 2026-04-25 A | 2026-08-08 A | CON-LEG101-LR-2740, CON-LEG101-LR-2360, CON-LEG101-PR-1970 | 100% |  |
| CON-LEG101-LR-2520 |  | Installation of Fire Hydrant [Local – 05 ] | 11d | 2026-04-25 A | 2026-09-30 A | CON-LEG101-LR-2140, CON-LEG101-LR-2440, CON-LEG101-PR-2470 | 100% |  |
| CON-LEG101-LR-2660 |  | Installation of Wash out chambers [Local – 05 ] | 21d | 2026-04-30 A | 2026-12-17 | CON-LEG101-LR-1590, CON-LEG101-PR-1970 | 97% | 176.24d |
|  | 6 | **Public Water Utility Distribution** |  | 2026-03-24 | 2026-12-20 |  |  |  |
|  | 2 | **Pipe Work** |  | 2026-03-24 | 2026-05-03 |  |  |  |
| CON-LEG101-LR-10100 |  | Excavation for Public Water Utility Distribution Piping [Local – 05 ] | 13d | 2026-03-24 A | 2026-04-21 A | CON-LEG101-LR-2140, CON-LEG101-LR-3460, CON-LEG101-LR-4260, CON-LEG101-EN-1690, CON-LEG101-EN-1700, CON-LEG101-EN-1710, CON-LEG101-EN-3440, CON-LEG101-LR-2740 | 100% |  |
| CON-LEG101-LR-10200 |  | Granular bedding for Public Water Utility Distribution Piping [Local – 05 ] | 10d | 2026-03-30 A | 2026-04-22 A | CON-LEG101-LR-10100 | 100% |  |
| CON-LEG101-LR-10300 |  | Installation of Pipe for Public Water Utility Distribution Piping [Local – 05 ] | 14d | 2026-04-01 A | 2026-04-23 A | CON-LEG101-PR-4010, CON-LEG101-LR-10200, CON-LEG101-PR-1660 | 100% |  |
| CON-LEG101-LR-10400 |  | Testing for Public Water Utility Distribution Piping [Local – 05 ] | 10d | 2026-04-27 A | 2026-04-28 A | CON-LEG101-LR-10300 | 100% |  |
| CON-LEG101-LR-10500 |  | Concrete encasement, pipe dia 110 mm [Local – 05 ] | 7d | 2026-04-29 A | 2026-04-29 A | CON-LEG101-LR-10400, CON-LEG101-EN-3450, CON-LEG101-PR-1430 | 100% |  |
| CON-LEG101-LR-10600 |  | Granular Surround for Public Water Utility Distribution Piping [Local – 05 ] | 10d | 2026-04-30 A | 2026-04-30 A | CON-LEG101-LR-10500, CON-LEG101-EN-3450 | 100% |  |
| CON-LEG101-LR-10700 |  | Installation of Micron Marker Magnetic Tape [Local – 05 ] | 3d | 2026-05-02 A | 2026-05-02 A | CON-LEG101-LR-10600 | 100% |  |

| ID | WBS | Task | Duration | Start | Finish | Predecessors | Complete | Total float |
| --- | --- | --- | --- | --- | --- | --- | --- | --- |
| CON-LEG101-LR-10800 |  | Backfilling to Subgrade Elevation [Local – 05 ] | 10d | 2026-05-03 A | 2026-05-03 A | CON-LEG101-LR-10700, CON-LEG101-EN-3440 | 100% |  |
|  | 1 | **Valves/Chamber** |  | 2026-04-25 | 2026-12-20 |  |  |  |
| CON-LEG101-LR-1060 |  | Installation of Gate (Sluice) valves (Direct buried) [Local – 05 ] | 10d | 2026-04-25 A | 2026-08-08 A | CON-LEG101-LR-1240, CON-LEG101-LR-1240 SS, CON-LEG101-LR-10300, CON-LEG101-PR-1960 | 100% |  |
| CON-LEG101-LR-1140 |  | Installation of Wash-out Valves [Local – 05 ] | 10d | 2026-04-25 A | 2026-08-08 A | CON-LEG101-LR-1240, CON-LEG101-LR-1060, CON-LEG101-PR-1960 | 100% |  |
| CON-LEG101-LR-1240 |  | Installation of Wash out chambers [Local – 05 ] | 20d | 2026-04-30 A | 2026-12-20 | CON-LEG101-LR-10300, CON-LEG101-PR-1960 | 95% | 202.44d |
|  | 1 | **Electrical Works** |  | 2026-05-02 | 2027-06-23 |  |  |  |
|  | 3 | **Low Voltage** |  | 2026-05-02 | 2027-06-23 |  |  |  |
| CON-LEG101-LR-8040 |  | Installation of Low Voltage Cables Duct Banks [Local – 05 ] | 6d | 2026-05-02 A | 2026-05-07 A | CON-LEG101-LR-7840, CON-LEG101-PR-1320 | 100% |  |
| CON-LEG101-LR-7840 |  | Excavation works for Low Voltage Cables [Local – 05 ] | 21d | 2026-07-30 A | 2026-08-17 A | CON-LEG101-LR-4260, CON-LEG101-LR-11470, CON-LEG101-LR-3460, CON-LEG101-LR-3550, CON-LEG101-LR-2140, CON-LEG101-LR-6940, CON-LEG101-EN-1680, CON-LEG101-EN-3440 | 100% |  |
| CON-LEG101-LR-7940 |  | Installation of Low Voltage Cables [Local – 05 ] | 14d | 2026-08-02 A | 2026-08-17 A | CON-LEG101-LR-8040, CON-LEG101-LR-7840, CON-LEG101-PR-1900 | 100% |  |
| CON-LEG101-LR-8820 |  | Installation of Earthing System [Local – 05 ] | 2d | 2027-06-22 | 2027-06-23 | CON-LEG101-LR-8040, CON-LEG101-PR-1320, CON-LEG101-LR-7940, CON-LEG101-PR-1310 |  | 24.4d |
|  | 10 | **Telecommunications** |  | 2026-05-02 | 2027-06-23 |  |  |  |
| CON-LEG101-LR-8890 |  | Installation of Sand and soil encased duct banks for primary network [Local – 05 ] | 10d | 2026-05-02 A | 2026-07-04 A | CON-LEG101-LR-7840 SS, CON-LEG101-EN-3280, CON-LEG101-EN-3440 | 100% |  |
| CON-LEG101-LR-8990 |  | Installation of Concrete encased duct banks for primary network [Local – 05 ] | 8d | 2026-05-02 A | 2026-05-07 A | CON-LEG101-PR-3180, CON-LEG101-PR-4020, CON-LEG101-LR-8890, CON-LEG101-PR-1430 | 100% |  |
| CON-LEG101-LR-9290 |  | Installation of Concrete encased duct banks for for combined network of primary and secondary [Local – 05 ] | 7d | 2026-05-02 A | 2026-05-20 A | CON-LEG101-PR-3250, CON-LEG101-LR-9190, CON-LEG101-PR-1430 | 100% |  |
| CON-LEG101-LR-9390 |  | Installation of Reinforced concrete manhole [Local – 05 ] | 10d | 2026-05-02 A | 2026-10-21 A | CON-LEG101-LR-9290, CON-LEG101-PR-3260, CON-LEG101-LR-8820 | 100% |  |
| CON-LEG101-LR-9090 |  | Installation of Sand encased duct banks for secondary network [Local – 05 ] | 8d | 2026-09-05 A | 2027-06-22 | CON-LEG101-LR-8990, CON-LEG101-EN-3440 | 90% | 24.6d |
| CON-LEG101-LR-9190 |  | Installation of Sand and soil encased duct banks, for combined network of primary and secondary [Local – 05 ] | 10d | 2026-09-05 A | 2027-06-23 | CON-LEG101-LR-9090, CON-LEG101-EN-3440 | 90% | 24.6d |
|  | 11 | **CCTV feeding system and GSM** |  | 2026-05-25 | 2027-07-05 |  |  |  |
| CON-LEG101-LR-9910 |  | Installation of 25 Meters pole for CCTV Cameras [Local – 05 ] | 4d | 2026-05-25 A | 2026-07-08 A | CON-LEG101-LR-9860, CON-LEG101-PR-3870 | 100% |  |
| CON-LEG101-LR-10000 |  | Installation of Short Range wireless point to point wireless bridge [Local – 05 ] | 2d | 2026-07-15 A | 2026-09-23 A | CON-LEG101-LR-9910, CON-LEG101-PR-3910 | 100% |  |
| CON-LEG101-LR-8610 |  | Excavation works for Low Voltage Cables for CCTV feeding system and GSM [Local – 05 ] | 4d | 2026-07-15 A | 2026-09-23 A | CON-LEG101-LR-8890, CON-LEG101-EN-3290, CON-LEG101-EN-3440 | 100% |  |
| CON-LEG101-LR-8680 |  | Installation of Low Voltage Cables for CCTV feeding system and GSM [Local – 05 ] | 6d | 2026-07-15 A | 2026-09-23 A | CON-LEG101-LR-8610, CON-LEG101-PR-1900 | 100% |  |
| CON-LEG101-LR-9440 |  | Installation of Fiber Optic Patch Panel 12 port [Local – 05 ] | 4d | 2026-07-15 A | 2026-09-23 A | CON-LEG101-LR-8680, CON-LEG101-PR-3360 | 100% |  |
| CON-LEG101-LR-9500 |  | Installation of 8POE ports Industrial Switches for remote poles [Local – 05 ] | 3d | 2026-07-15 A | 2026-09-23 A | CON-LEG101-LR-9440, CON-LEG101-PR-3410 | 100% |  |
| CON-LEG101-LR-9530 |  | Installation of Core Switch [Local – 05 ] | 8d | 2026-07-15 A | 2026-09-23 A | CON-LEG101-LR-9500, CON-LEG101-PR-3450 | 100% |  |
| CON-LEG101-LR-9550 |  | Installation of Access Switch 48 port [Local – 05 ] | 4d | 2026-07-15 A | 2026-09-23 A | CON-LEG101-LR-9530, CON-LEG101-PR-3490 | 100% |  |
| CON-LEG101-LR-9580 |  | Installation of Server [Local – 05 ] | 3d | 2026-07-15 A | 2026-09-23 A | CON-LEG101-LR-9550, CON-LEG101-PR-3530 | 100% |  |
| CON-LEG101-LR-9670 |  | Installation of IP Outdoor CCTV POE Camera,5 MP, Metal Housing [Local – 05 ] | 4d | 2026-07-15 A | 2026-09-23 A | CON-LEG101-LR-9600, CON-LEG101-PR-3610 | 100% |  |
| CON-LEG101-LR-9750 |  | Installation of Outdoor PTZ IP66 [Local – 05 ] | 3d | 2026-07-15 A | 2026-09-23 A | CON-LEG101-LR-9670, CON-LEG101-PR-3650 | 100% |  |
| CON-LEG101-LR-9860 |  | Installation of Horizontal Power Distribution Unit (min 8 outlets) [Local – 05 ] | 3d | 2026-07-15 A | 2026-09-23 A | CON-LEG101-LR-9810, CON-LEG101-PR-3730 | 100% |  |
| CON-LEG101-LR-9600 |  | Installation of Stand rack 42U- 19" [Local – 05 ] | 3d | 2027-06-24 | 2027-06-27 | CON-LEG101-LR-9580, CON-LEG101-PR-3570, CON-LEG101-LR-9390 |  | 44.6d |
| CON-LEG101-LR-9810 |  | Installation of LED Screen 43" (24/7 operation) with Ethernet decoders [Local – 05 ] | 2d | 2027-07-04 | 2027-07-05 | CON-LEG101-PR-3950, CON-LEG101-LR-9750, CON-LEG101-PR-3290 |  | 39.6d |
|  | 12 | **Earthing System** |  | 2027-08-05 | 2027-08-08 |  |  |  |
| CON-LEG101-LR-15150 |  | Installation of Earthing for Distribution panels,SL feeder pillars, KWH, Unit substations and RMU [Local – 05 ] | 2d | 2027-08-05 | 2027-08-08 | CON-LEG101-LR-7540, CON-LEG101-LR-7460, CON-LEG101-LR-10000, CON-LEG101-LR-9910 |  | 12.7d |
|  | 9 | **Road Lighting** |  | 2026-03-15 | 2027-08-09 |  |  |  |
| CON-LEG101-LR-8140 |  | Installation of Lighting poles [Local – 05 ] | 20d | 2026-03-15 A | 2026-08-17 A | CON-LEG101-PR-1950, CON-LEG101-LR-7840, CON-LEG101-LR-8130, CON-LEG101-PR-1910 | 100% |  |
| CON-LEG101-LR-7460 |  | Installation of Unit Substation Including concrete foundations and fencing [Local – 05 ] | 7d | 2026-07-15 A | 2027-07-28 | CON-LEG101-LR-8140, CON-LEG101-LR-8610, CON-LEG101-EN-3310, CON-LEG101-EN-3320, CON-LEG101-EN-3330, CON-LEG101-EN-3360, CON-LEG101-PR-1890 | 30% | 11.7d |
| CON-LEG101-LR-8240 |  | Installation of Street Lighting Luminaire [Local – 05 ] | 5d | 2026-08-01 A | 2026-08-17 A | CON-LEG101-LR-8140, CON-LEG101-PR-1920 | 100% |  |
| CON-LEG101-LR-8390 |  | Installation of Earthing for Streetlighting feeders for every end pole circuits. [Local – 05 ] | 5d | 2026-08-10 A | 2027-08-09 | CON-LEG101-LR-7460, CON-LEG101-LR-7540, CON-LEG101-PR-1480, CON-LEG101-LR-8240, CON-LEG101-PR-1310 | 40% | 11.7d |
| CON-LEG101-LR-7540 |  | Installation of Ring Main Unit RMU [Local – 05 ] | 7d | 2027-07-28 | 2027-08-05 | CON-LEG101-LR-8140, CON-LEG101-LR-7460, CON-LEG101-PR-2510 |  | 11.7d |
|  | 6 | **Local – 06** |  | 2026-03-16 | 2027-08-03 |  |  |  |
|  | 5 | **TSE Network** |  | 2026-04-01 | 2026-09-03 |  |  |  |
|  | 2 | **Pipe Work** |  | 2026-04-01 | 2026-06-23 |  |  |  |
| CON-LEG101-LR-1380 |  | Excavation for TSE Network [Local – 06 ] | 10d | 2026-04-01 A | 2026-04-12 A | CON-LEG101-LR-3560, CON-LEG101-LR-3480, CON-LEG101-LR-11560, CON-LEG101-LR-4280, CON-LEG101-LR-2840, CON-LEG101-EN-1720, CON-LEG101-EN-1730, CON-LEG101-EN-1740, CON-LEG101-EN-1810 | 100% |  |
| CON-LEG101-LR-1490 |  | Granular bedding for TSE Network [Local – 06 ] | 7d | 2026-04-13 A | 2026-05-21 A | CON-LEG101-LR-1380 | 100% |  |
| CON-LEG101-LR-1600 |  | Installation of Pipe for TSE Network [Local – 06 ] | 10d | 2026-04-15 A | 2026-05-24 A | CON-LEG101-PR-2590, CON-LEG101-LR-1490, CON-LEG101-PR-1690 | 100% |  |
| CON-LEG101-LR-1710 |  | Testing for TSE Network [Local – 06 ] | 7d | 2026-06-13 A | 2026-06-14 A | CON-LEG101-LR-1600 | 100% |  |
| CON-LEG101-LR-1830 |  | Concrete encasement, pipe dia 110 mm [Local – 06 ] | 2d | 2026-06-15 A | 2026-06-17 A | CON-LEG101-LR-1710, CON-LEG101-EN-3450, CON-LEG101-PR-1430 | 100% |  |
| CON-LEG101-LR-1930 |  | Granular Surround for TSE Network [Local – 06 ] | 7d | 2026-06-16 A | 2026-06-17 A | CON-LEG101-LR-1830, CON-LEG101-EN-3450 | 100% |  |
| CON-LEG101-LR-2040 |  | Installation of Micron Marker Magnetic Tape [Local – 06 ] | 3d | 2026-06-18 A | 2026-06-18 A | CON-LEG101-LR-1930 | 100% |  |
| CON-LEG101-LR-2150 |  | Backfilling to Subgrade Elevation [Local – 06 ] | 14d | 2026-06-20 A | 2026-06-23 A | CON-LEG101-LR-2040, CON-LEG101-EN-3440 | 100% |  |
|  | 1 | **Valves/Chamber** |  | 2026-05-13 | 2026-09-03 |  |  |  |
| CON-LEG101-LR-2260 |  | Installation of Gate (Sluice) valves (Direct buried) [Local – 06 ] | 9d | 2026-05-13 A | 2026-08-06 A | CON-LEG101-LR-2150, CON-LEG101-LR-1600, CON-LEG101-PR-1970 | 100% |  |
| CON-LEG101-LR-2530 |  | Installation of Fire Hydrant [Local – 06 ] | 15d | 2026-06-10 A | 2026-09-03 A | CON-LEG101-LR-2150, CON-LEG101-LR-2260, CON-LEG101-PR-2470 | 100% |  |
|  | 6 | **Public Water Utility Distribution** |  | 2026-04-01 | 2026-05-19 |  |  |  |
|  | 2 | **Pipe Work** |  | 2026-04-01 | 2026-05-19 |  |  |  |
| CON-LEG101-LR-10110 |  | Excavation for Public Water Utility Distribution Piping [Local – 06 ] | 11d | 2026-04-01 A | 2026-04-12 A | CON-LEG101-LR-2150, CON-LEG101-LR-3480, CON-LEG101-LR-4280, CON-LEG101-EN-1690, CON-LEG101-EN-1700, CON-LEG101-EN-1710, CON-LEG101-EN-3440 | 100% |  |
| CON-LEG101-LR-10210 |  | Granular bedding for Public Water Utility Distribution Piping [Local – 06 ] | 8d | 2026-04-13 A | 2026-05-09 A | CON-LEG101-LR-10110 | 100% |  |
| CON-LEG101-LR-10310 |  | Installation of Pipe for Public Water Utility Distribution Piping [Local – 06 ] | 12d | 2026-04-15 A | 2026-05-10 A | CON-LEG101-PR-4010, CON-LEG101-LR-10210, CON-LEG101-PR-1660 | 100% |  |
| CON-LEG101-LR-10410 |  | Testing for Public Water Utility Distribution Piping [Local – 06 ] | 8d | 2026-05-11 A | 2026-05-12 A | CON-LEG101-LR-10310 | 100% |  |
| CON-LEG101-LR-10510 |  | Concrete encasement, pipe dia 110 mm [Local – 06 ] | 3d | 2026-05-13 A | 2026-05-14 A | CON-LEG101-LR-10410, CON-LEG101-EN-3450, CON-LEG101-PR-1430 | 100% |  |
| CON-LEG101-LR-10610 |  | Granular Surround for Public Water Utility Distribution Piping [Local – 06 ] | 8d | 2026-05-13 A | 2026-05-14 A | CON-LEG101-LR-10510, CON-LEG101-EN-3450 | 100% |  |
| CON-LEG101-LR-10710 |  | Installation of Micron Marker Magnetic Tape [Local – 06 ] | 3d | 2026-05-16 A | 2026-05-16 A | CON-LEG101-LR-10610 | 100% |  |
| CON-LEG101-LR-10810 |  | Backfilling to Subgrade Elevation [Local – 06 ] | 7d | 2026-05-17 A | 2026-05-19 A | CON-LEG101-LR-10710, CON-LEG101-EN-3440 | 100% |  |
|  | 1 | **Valves/Chamber** |  | 2026-05-09 | 2026-05-10 |  |  |  |
| CON-LEG101-LR-1070 |  | Installation of Gate (Sluice) valves (Direct buried) [Local – 06 ] | 3d | 2026-05-09 A | 2026-05-10 A | CON-LEG101-LR-10710, CON-LEG101-LR-10310, CON-LEG101-PR-1960 | 100% |  |
|  | 1 | **Electrical Works** |  | 2026-06-13 | 2026-08-02 |  |  |  |
|  | 3 | **Low Voltage** |  | 2026-06-13 | 2026-08-02 |  |  |  |
| CON-LEG101-LR-8050 |  | Installation of Low Voltage Cables Duct Banks [Local – 06 ] | 4d | 2026-06-13 A | 2026-06-17 A | CON-LEG101-LR-7850, CON-LEG101-PR-1320 | 100% |  |

| ID | WBS | Task | Duration | Start | Finish | Predecessors | Complete | Total float |
| --- | --- | --- | --- | --- | --- | --- | --- | --- |
| CON-LEG101-LR-7850 |  | Excavation works for Low Voltage Cables [Local – 06 ] | 6d | 2026-07-23 A | 2026-07-30 A | CON-LEG101-LR-4280, CON-LEG101-LR-11560, CON-LEG101-LR-3480, CON-LEG101-LR-3560, CON-LEG101-LR-2150, CON-LEG101-LR-10810, CON-LEG101-LR-6950, CON-LEG101-EN-1680, CON-LEG101-EN-3440, CON-LEG101-LR-1070 | 100% |  |
| CON-LEG101-LR-7950 |  | Installation of Low Voltage Cables [Local – 06 ] | 6d | 2026-07-25 A | 2026-08-02 A | CON-LEG101-LR-8050, CON-LEG101-LR-7850, CON-LEG101-PR-1900 | 100% |  |
|  | 10 | **Telecommunications** |  | 2026-05-13 | 2027-06-23 |  |  |  |
| CON-LEG101-LR-9400 |  | Installation of Reinforced concrete manhole [Local – 06 ] | 6d | 2026-05-13 A | 2026-07-05 A | CON-LEG101-LR-9300, CON-LEG101-PR-3260 | 100% |  |
| CON-LEG101-LR-8900 |  | Installation of Sand and soil encased duct banks for primary network [Local – 06 ] | 4d | 2026-06-13 A | 2026-07-04 A | CON-LEG101-LR-7850, CON-LEG101-EN-3280, CON-LEG101-EN-3440, CON-LEG101-LR-7950 | 100% |  |
| CON-LEG101-LR-9000 |  | Installation of Concrete encased duct banks for primary network [Local – 06 ] | 6d | 2026-06-13 A | 2026-06-17 A | CON-LEG101-PR-3180, CON-LEG101-PR-4020, CON-LEG101-LR-8900, CON-LEG101-PR-1430 | 100% |  |
| CON-LEG101-LR-9300 |  | Installation of Concrete encased duct banks for for combined network of primary and secondary [Local – 06 ] | 4d | 2026-06-13 A | 2026-06-17 A | CON-LEG101-PR-3250, CON-LEG101-LR-9200, CON-LEG101-PR-1430 | 100% |  |
| CON-LEG101-LR-9100 |  | Installation of Sand encased duct banks for secondary network [Local – 06 ] | 5d | 2026-08-24 A | 2027-06-22 | CON-LEG101-LR-9000, CON-LEG101-EN-3440 | 80% | 24.8d |
| CON-LEG101-LR-9200 |  | Installation of Sand and soil encased duct banks, for combined network of primary and secondary [Local – 06 ] | 4d | 2026-08-24 A | 2027-06-23 | CON-LEG101-LR-9100, CON-LEG101-EN-3440 | 80% | 24.8d |
|  | 11 | **CCTV feeding system and GSM** |  | 2026-06-06 | 2026-09-24 |  |  |  |
| CON-LEG101-LR-9920 |  | Installation of 25 Meters pole for CCTV Cameras [Local – 06 ] | 4d | 2026-06-06 A | 2026-07-12 A | CON-LEG101-LR-9760, CON-LEG101-PR-3870 | 100% |  |
| CON-LEG101-LR-10010 |  | Installation of Short Range wireless point to point wireless bridge [Local – 06 ] | 4d | 2026-07-20 A | 2026-09-24 A | CON-LEG101-LR-9920, CON-LEG101-PR-3910 | 100% |  |
| CON-LEG101-LR-9510 |  | Installation of 8POE ports Industrial Switches for remote poles [Local – 06 ] | 7d | 2026-07-20 A | 2026-09-24 A | CON-LEG101-LR-8900, CON-LEG101-PR-3410 | 100% |  |
| CON-LEG101-LR-9680 |  | Installation of IP Outdoor CCTV POE Camera,5 MP, Metal Housing [Local – 06 ] | 4d | 2026-07-20 A | 2026-09-24 A | CON-LEG101-LR-9510, CON-LEG101-PR-3610 | 100% |  |
| CON-LEG101-LR-9760 |  | Installation of Outdoor PTZ IP66 [Local – 06 ] | 3d | 2026-07-20 A | 2026-09-24 A | CON-LEG101-LR-9680, CON-LEG101-PR-3650 | 100% |  |
|  | 12 | **Earthing System** |  | 2027-07-31 | 2027-08-03 |  |  |  |
| CON-LEG101-LR-15140 |  | Installation of Earthing for Distribution panels,SL feeder pillars, KWH, Unit substations and RMU [Local – 06 ] | 3d | 2027-07-31 | 2027-08-03 | CON-LEG101-LR-10010, CON-LEG101-LR-9920, CON-LEG101-LR-7550, CON-LEG101-LR-7470 |  | 16.8d |
|  | 9 | **Road Lighting** |  | 2026-03-16 | 2027-08-02 |  |  |  |
| CON-LEG101-LR-8150 |  | Installation of Lighting poles [Local – 06 ] | 10d | 2026-03-16 A | 2026-08-17 A | CON-LEG101-PR-1950, CON-LEG101-LR-7850, CON-LEG101-LR-8140, CON-LEG101-PR-1910 | 100% |  |
| CON-LEG101-LR-7470 |  | Installation of Unit Substation Including concrete foundations and fencing [Local – 06 ] | 4d | 2026-07-11 A | 2027-07-26 | CON-LEG101-LR-8150, CON-LEG101-LR-9510, CON-LEG101-EN-3310, CON-LEG101-EN-3320, CON-LEG101-EN-3330, CON-LEG101-EN-3360, CON-LEG101-PR-1890 | 30% | 16.8d |
| CON-LEG101-LR-8250 |  | Installation of Street Lighting Luminaire [Local – 06 ] | 4d | 2026-07-22 A | 2026-08-17 A | CON-LEG101-LR-8150, CON-LEG101-PR-1920 | 100% |  |
| CON-LEG101-LR-8400 |  | Installation of Earthing for Streetlighting feeders for every end pole circuits. [Local – 06 ] | 3d | 2026-08-12 A | 2027-08-02 | CON-LEG101-LR-7550, CON-LEG101-LR-7470, CON-LEG101-PR-1480, CON-LEG101-LR-8250, CON-LEG101-PR-1310 | 30% | 17.7d |
| CON-LEG101-LR-7550 |  | Installation of Ring Main Unit RMU [Local – 06 ] | 4d | 2027-07-26 | 2027-07-31 | CON-LEG101-LR-7470, CON-LEG101-PR-2510 |  | 16.8d |
|  | 7 | **Local – 07** |  | 2026-02-03 | 2027-08-05 |  |  |  |
|  | 5 | **TSE Network** |  | 2026-02-03 | 2026-09-05 |  |  |  |
|  | 2 | **Pipe Work** |  | 2026-02-03 | 2026-05-31 |  |  |  |
| CON-LEG101-LR-1390 |  | Excavation for TSE Network [Local – 07 ] | 7d | 2026-02-03 A | 2026-02-09 A | CON-LEG101-LR-3570, CON-LEG101-LR-3490, CON-LEG101-LR-11650, CON-LEG101-LR-4290, CON-LEG101-LR-2150, CON-LEG101-LR-2850, CON-LEG101-EN-1720, CON-LEG101-EN-1730, CON-LEG101-EN-1740, CON-LEG101-EN-1810, CON-LEG101-LR-2530 | 100% |  |
| CON-LEG101-LR-1500 |  | Granular bedding for TSE Network [Local – 07 ] | 2d | 2026-02-10 A | 2026-02-19 A | CON-LEG101-LR-1390 | 100% |  |
| CON-LEG101-LR-1610 |  | Installation of Pipe for TSE Network [Local – 07 ] | 7d | 2026-02-11 A | 2026-02-21 A | CON-LEG101-PR-2590, CON-LEG101-LR-1500, CON-LEG101-PR-1690 | 100% |  |
| CON-LEG101-LR-1940 |  | Granular Surround for TSE Network [Local – 07 ] | 2d | 2026-02-21 A | 2026-02-22 A | CON-LEG101-LR-1720, CON-LEG101-EN-3450 | 100% |  |
| CON-LEG101-LR-2050 |  | Installation of Micron Marker Magnetic Tape [Local – 07 ] | 3d | 2026-03-24 A | 2026-03-24 A | CON-LEG101-LR-1940 | 100% |  |
| CON-LEG101-LR-2160 |  | Backfilling to Subgrade Elevation [Local – 07 ] | 4d | 2026-03-25 A | 2026-03-26 A | CON-LEG101-LR-2050, CON-LEG101-EN-3440 | 100% |  |
| CON-LEG101-LR-1720 |  | Testing for TSE Network [Local – 07 ] | 4d | 2026-05-31 A | 2026-05-31 A | CON-LEG101-LR-1610 | 100% |  |
|  | 1 | **Valves/Chamber** |  | 2026-05-03 | 2026-09-05 |  |  |  |
| CON-LEG101-LR-2270 |  | Installation of Gate (Sluice) valves (Direct buried) [Local – 07 ] | 10d | 2026-05-03 A | 2026-07-15 A | CON-LEG101-LR-2160, CON-LEG101-LR-1610, CON-LEG101-PR-1970, CON-LEG101-LR-2740, CON-LEG101-LR-2530, CON-LEG101-LR-10810, CON-LEG101-LR-2250 | 100% |  |
| CON-LEG101-LR-2540 |  | Installation of Fire Hydrant [Local – 07 ] | 15d | 2026-06-03 A | 2026-09-05 A | CON-LEG101-LR-2160, CON-LEG101-LR-2270, CON-LEG101-PR-2470 | 100% |  |
|  | 6 | **Public Water Utility Distribution** |  | 2026-02-03 | 2026-08-06 |  |  |  |
|  | 2 | **Pipe Work** |  | 2026-02-03 | 2026-05-14 |  |  |  |
| CON-LEG101-LR-10120 |  | Excavation for Public Water Utility Distribution Piping [Local – 07 ] | 10d | 2026-02-03 A | 2026-02-09 A | CON-LEG101-LR-10810, CON-LEG101-LR-2160, CON-LEG101-LR-3490, CON-LEG101-LR-4290, CON-LEG101-EN-1690, CON-LEG101-EN-1700, CON-LEG101-EN-1710, CON-LEG101-EN-3440 | 100% |  |
| CON-LEG101-LR-10220 |  | Granular bedding for Public Water Utility Distribution Piping [Local – 07 ] | 4d | 2026-02-10 A | 2026-02-19 A | CON-LEG101-LR-10120 | 100% |  |
| CON-LEG101-LR-10320 |  | Installation of Pipe for Public Water Utility Distribution Piping [Local – 07 ] | 10d | 2026-02-11 A | 2026-02-21 A | CON-LEG101-PR-4010, CON-LEG101-LR-10220, CON-LEG101-PR-1660 | 100% |  |
| CON-LEG101-LR-10620 |  | Granular Surround for Public Water Utility Distribution Piping [Local – 07 ] | 3d | 2026-02-21 A | 2026-02-22 A | CON-LEG101-LR-10520, CON-LEG101-EN-3450 | 100% |  |
| CON-LEG101-LR-10520 |  | Concrete encasement, pipe dia 110 mm [Local – 07 ] | 6d | 2026-03-17 A | 2026-03-17 A | CON-LEG101-LR-10420, CON-LEG101-EN-3450, CON-LEG101-PR-1430 | 100% |  |
| CON-LEG101-LR-10720 |  | Installation of Micron Marker Magnetic Tape [Local – 07 ] | 3d | 2026-03-24 A | 2026-03-24 A | CON-LEG101-LR-10620 | 100% |  |
| CON-LEG101-LR-10820 |  | Backfilling to Subgrade Elevation [Local – 07 ] | 2d | 2026-03-25 A | 2026-03-26 A | CON-LEG101-LR-10720, CON-LEG101-EN-3440 | 100% |  |
| CON-LEG101-LR-10420 |  | Testing for Public Water Utility Distribution Piping [Local – 07 ] | 3d | 2026-05-13 A | 2026-05-14 A | CON-LEG101-LR-10320 | 100% |  |
|  | 1 | **Valves/Chamber** |  | 2026-05-03 | 2026-08-06 |  |  |  |
| CON-LEG101-LR-1080 |  | Installation of Gate (Sluice) valves (Direct buried) [Local – 07 ] | 5d | 2026-05-03 A | 2026-08-06 A | CON-LEG101-LR-10820, CON-LEG101-LR-10320, CON-LEG101-PR-1960, CON-LEG101-LR-2540 | 100% |  |
|  | 1 | **Electrical Works** |  | 2026-06-01 | 2026-07-27 |  |  |  |
|  | 3 | **Low Voltage** |  | 2026-06-01 | 2026-07-27 |  |  |  |
| CON-LEG101-LR-8060 |  | Installation of Low Voltage Cables Duct Banks [Local – 07 ] | 3d | 2026-06-01 A | 2026-06-03 A | CON-LEG101-LR-7860, CON-LEG101-PR-1320 | 100% |  |
| CON-LEG101-LR-7860 |  | Excavation works for Low Voltage Cables [Local – 07 ] | 7d | 2026-07-22 A | 2026-07-25 A | CON-LEG101-LR-4290, CON-LEG101-LR-11650, CON-LEG101-LR-3490, CON-LEG101-LR-3570, CON-LEG101-LR-2160, CON-LEG101-LR-10120, CON-LEG101-LR-6960, CON-LEG101-EN-1680, CON-LEG101-EN-3440 | 100% |  |
| CON-LEG101-LR-7960 |  | Installation of Low Voltage Cables [Local – 07 ] | 7d | 2026-07-25 A | 2026-07-27 A | CON-LEG101-LR-8060, CON-LEG101-LR-7860, CON-LEG101-PR-1900 | 100% |  |
|  | 10 | **Telecommunications** |  | 2026-05-20 | 2026-09-10 |  |  |  |
| CON-LEG101-LR-9310 |  | Installation of Concrete encased duct banks for for combined network of primary and secondary [Local – 07 ] | 2d | 2026-05-20 A | 2026-05-24 A | CON-LEG101-PR-3250, CON-LEG101-LR-9210, CON-LEG101-PR-1430 | 100% |  |
| CON-LEG101-LR-9410 |  | Installation of Reinforced concrete manhole [Local – 07 ] | 4d | 2026-05-20 A | 2026-07-06 A | CON-LEG101-LR-9310, CON-LEG101-PR-3260 | 100% |  |
| CON-LEG101-LR-8910 |  | Installation of Sand and soil encased duct banks for primary network [Local – 07 ] | 4d | 2026-08-08 A | 2026-09-10 A | CON-LEG101-LR-7860, CON-LEG101-EN-3280, CON-LEG101-EN-3440, CON-LEG101-LR-7960 SS+3d | 100% |  |
| CON-LEG101-LR-9010 |  | Installation of Concrete encased duct banks for primary network [Local – 07 ] | 2d | 2026-08-08 A | 2026-09-10 A | CON-LEG101-PR-3180, CON-LEG101-PR-4020, CON-LEG101-LR-8910, CON-LEG101-PR-1430 | 100% |  |
| CON-LEG101-LR-9110 |  | Installation of Sand encased duct banks for secondary network [Local – 07 ] | 3d | 2026-08-08 A | 2026-09-10 A | CON-LEG101-LR-9010, CON-LEG101-EN-3440 | 100% |  |
| CON-LEG101-LR-9210 |  | Installation of Sand and soil encased duct banks, for combined network of primary and secondary [Local – 07 ] | 4d | 2026-08-08 A | 2026-09-10 A | CON-LEG101-LR-9110, CON-LEG101-EN-3440 | 100% |  |
|  | 11 | **CCTV feeding system and GSM** |  | 2026-07-22 | 2026-09-20 |  |  |  |
| CON-LEG101-LR-10020 |  | Installation of Short Range wireless point to point wireless bridge [Local – 07 ] | 7d | 2026-07-22 A | 2026-09-20 A | CON-LEG101-LR-8910, CON-LEG101-PR-3910 | 100% |  |
|  | 12 | **Earthing System** |  | 2027-08-01 | 2027-08-05 |  |  |  |
| CON-LEG101-LR-15130 |  | Installation of Earthing for Distribution panels,SL feeder pillars, KWH, Unit substations and RMU [Local – 07 ] | 4d | 2027-08-01 | 2027-08-05 | CON-LEG101-LR-9410, CON-LEG101-LR-10020, CON-LEG101-LR-7560, CON-LEG101-LR-7480 |  | 15.4d |
|  | 9 | **Road Lighting** |  | 2026-05-17 | 2027-08-03 |  |  |  |
| CON-LEG101-LR-8160 |  | Installation of Lighting poles [Local – 07 ] | 7d | 2026-05-17 A | 2026-08-17 A | CON-LEG101-PR-1950, CON-LEG101-LR-7860, CON-LEG101-LR-8150 SS, CON-LEG101-PR-1910 | 100% |  |
| CON-LEG101-LR-7480 |  | Installation of Unit Substation Including concrete foundations and fencing [Local – 07 ] | 4d | 2026-07-12 A | 2027-07-27 | CON-LEG101-LR-8160, CON-LEG101-LR-10020, CON-LEG101-EN-3310, CON-LEG101-EN-3320, CON-LEG101-EN-3330, CON-LEG101-EN-3360, CON-LEG101-PR-1890 | 40% | 15.4d |
| CON-LEG101-LR-8260 |  | Installation of Street Lighting Luminaire [Local – 07 ] | 7d | 2026-07-18 A | 2026-08-17 A | CON-LEG101-LR-8160, CON-LEG101-PR-1920 | 100% |  |
| CON-LEG101-LR-8410 |  | Installation of Earthing for Streetlighting feeders for every end pole circuits. [Local – 07 ] | 4d | 2026-08-26 A | 2027-08-03 | CON-LEG101-LR-7480, CON-LEG101-LR-7560, CON-LEG101-PR-1480, CON-LEG101-LR-8260, CON-LEG101-PR-1310 | 50% | 17.4d |
| CON-LEG101-LR-7560 |  | Installation of Ring Main Unit RMU [Local – 07 ] | 4d | 2027-07-27 | 2027-08-01 | CON-LEG101-LR-7480, CON-LEG101-PR-2510 |  | 15.4d |

| ID | WBS | Task | Duration | Start | Finish | Predecessors | Complete | Total float |
| --- | --- | --- | --- | --- | --- | --- | --- | --- |
|  | 8 | **Local – 08** |  | 2026-01-19 | 2027-08-03 |  |  |  |
|  | 5 | **TSE Network** |  | 2026-01-19 | 2026-12-19 |  |  |  |
|  | 2 | **Pipe Work** |  | 2026-01-19 | 2026-04-16 |  |  |  |
| CON-LEG101-LR-1400 |  | Excavation for TSE Network [Local – 08 ] | 11d | 2026-01-19 A | 2026-01-25 A | CON-LEG101-LR-4300, CON-LEG101-LR-11740, CON-LEG101-LR-3670, CON-LEG101-EN-1720, CON-LEG101-EN-1730, CON-LEG101-EN-1740, CON-LEG101-EN-1810 | 100% |  |
| CON-LEG101-LR-1510 |  | Granular bedding for TSE Network [Local – 08 ] | 9d | 2026-01-26 A | 2026-02-11 A | CON-LEG101-LR-1400 | 100% |  |
| CON-LEG101-LR-1620 |  | Installation of Pipe for TSE Network [Local – 08 ] | 15d | 2026-01-27 A | 2026-02-18 A | CON-LEG101-PR-2590, CON-LEG101-LR-1510, CON-LEG101-PR-1690 | 100% |  |
| CON-LEG101-LR-1950 |  | Granular Surround for TSE Network [Local – 08 ] | 9d | 2026-01-29 A | 2026-02-19 A | CON-LEG101-LR-1840, CON-LEG101-EN-3450 | 100% |  |
| CON-LEG101-LR-1840 |  | Concrete encasement, pipe dia 110 mm [Local – 08 ] | 2d | 2026-02-11 A | 2026-02-21 A | CON-LEG101-LR-1730, CON-LEG101-EN-3450, CON-LEG101-PR-1430 | 100% |  |
| CON-LEG101-LR-2060 |  | Installation of Micron Marker Magnetic Tape [Local – 08 ] | 4d | 2026-02-21 A | 2026-02-22 A | CON-LEG101-LR-1950 | 100% |  |
| CON-LEG101-LR-2170 |  | Backfilling to Subgrade Elevation [Local – 08 ] | 17d | 2026-02-22 A | 2026-02-23 A | CON-LEG101-LR-2060, CON-LEG101-EN-3440 | 100% |  |
| CON-LEG101-LR-1730 |  | Testing for TSE Network [Local – 08 ] | 9d | 2026-04-15 A | 2026-04-16 A | CON-LEG101-LR-1620 | 100% |  |
|  | 1 | **Valves/Chamber** |  | 2026-03-04 | 2026-12-19 |  |  |  |
| CON-LEG101-LR-2280 |  | Installation of Gate (Sluice) valves (Direct buried) [Local – 08 ] | 14d | 2026-03-04 A | 2026-08-06 A | CON-LEG101-LR-2170, CON-LEG101-LR-2670, CON-LEG101-LR-2750, CON-LEG101-LR-1620, CON-LEG101-PR-1970 | 100% |  |
| CON-LEG101-LR-2370 |  | Installation of Wash-out Valves [Local – 08 ] | 15d | 2026-03-04 A | 2026-08-06 A | CON-LEG101-LR-2670, CON-LEG101-LR-2280, CON-LEG101-PR-1970 | 100% |  |
| CON-LEG101-LR-2450 |  | Installation of Air Valves [Local – 08 ] | 15d | 2026-03-04 A | 2026-08-06 A | CON-LEG101-LR-2750, CON-LEG101-LR-2370, CON-LEG101-PR-1970 | 100% |  |
| CON-LEG101-LR-2550 |  | Installation of Fire Hydrant [Local – 08 ] | 21d | 2026-03-05 A | 2026-09-30 A | CON-LEG101-LR-2170, CON-LEG101-LR-2450, CON-LEG101-PR-2470 | 100% |  |
| CON-LEG101-LR-2750 |  | Installation of Air Valve chambers [Local – 08 ] | 21d | 2026-04-16 A | 2026-12-19 | CON-LEG101-LR-2670, CON-LEG101-PR-1970 | 95% | 186.6d |
| CON-LEG101-LR-2670 |  | Installation of Wash out chambers [Local – 08 ] | 21d | 2026-04-30 A | 2026-12-17 | CON-LEG101-LR-1620, CON-LEG101-PR-1970, CON-LEG101-LR-2170 | 95% | 186.6d |
|  | 6 | **Public Water Utility Distribution** |  | 2026-03-07 | 2026-08-06 |  |  |  |
|  | 2 | **Pipe Work** |  | 2026-03-07 | 2026-04-16 |  |  |  |
| CON-LEG101-LR-10130 |  | Excavation for Public Water Utility Distribution Piping [Local – 08 ] | 11d | 2026-03-07 A | 2026-03-10 A | CON-LEG101-LR-2170, CON-LEG101-LR-4300, CON-LEG101-EN-1690, CON-LEG101-EN-1700, CON-LEG101-EN-1710, CON-LEG101-EN-3440 | 100% |  |
| CON-LEG101-LR-10230 |  | Granular bedding for Public Water Utility Distribution Piping [Local – 08 ] | 8d | 2026-03-11 A | 2026-03-14 A | CON-LEG101-LR-10130 | 100% |  |
| CON-LEG101-LR-10330 |  | Installation of Pipe for Public Water Utility Distribution Piping [Local – 08 ] | 11d | 2026-03-15 A | 2026-03-24 A | CON-LEG101-PR-4010, CON-LEG101-LR-10230, CON-LEG101-PR-1660 | 100% |  |
| CON-LEG101-LR-10530 |  | Concrete encasement, pipe dia 110 mm [Local – 08 ] | 3d | 2026-03-26 A | 2026-03-26 A | CON-LEG101-LR-10430, CON-LEG101-EN-3450, CON-LEG101-PR-1430 | 100% |  |
| CON-LEG101-LR-10630 |  | Granular Surround for Public Water Utility Distribution Piping [Local – 08 ] | 8d | 2026-03-28 A | 2026-03-28 A | CON-LEG101-LR-10530, CON-LEG101-EN-3450 | 100% |  |
| CON-LEG101-LR-10730 |  | Installation of Micron Marker Magnetic Tape [Local – 08 ] | 3d | 2026-03-29 A | 2026-03-30 A | CON-LEG101-LR-10630 | 100% |  |
| CON-LEG101-LR-10830 |  | Backfilling to Subgrade Elevation [Local – 08 ] | 7d | 2026-03-31 A | 2026-04-02 A | CON-LEG101-LR-10730, CON-LEG101-EN-3440 | 100% |  |
| CON-LEG101-LR-10430 |  | Testing for Public Water Utility Distribution Piping [Local – 08 ] | 8d | 2026-04-16 A | 2026-04-16 A | CON-LEG101-LR-10330 | 100% |  |
|  | 1 | **Valves/Chamber** |  | 2026-05-03 | 2026-08-06 |  |  |  |
| CON-LEG101-LR-1090 |  | Installation of Gate (Sluice) valves (Direct buried) [Local – 08 ] | 5d | 2026-05-03 A | 2026-08-06 A | CON-LEG101-LR-10830, CON-LEG101-LR-10330, CON-LEG101-PR-1960, CON-LEG101-LR-1080 SS | 100% |  |
|  | 1 | **Electrical Works** |  | 2026-07-07 | 2027-07-11 |  |  |  |
|  | 3 | **Low Voltage** |  | 2026-07-07 | 2027-07-11 |  |  |  |
| CON-LEG101-LR-8070 |  | Installation of Low Voltage Cables Duct Banks [Local – 08 ] | 10d | 2026-07-07 A | 2026-07-09 A | CON-LEG101-LR-7870, CON-LEG101-PR-1320 | 100% |  |
| CON-LEG101-LR-7870 |  | Excavation works for Low Voltage Cables [Local – 08 ] | 10d | 2026-08-18 A | 2026-08-27 A | CON-LEG101-LR-4300, CON-LEG101-LR-11740, CON-LEG101-LR-2170, CON-LEG101-LR-10830, CON-LEG101-EN-1680, CON-LEG101-EN-3440 | 100% |  |
| CON-LEG101-LR-7970 |  | Installation of Low Voltage Cables [Local – 08 ] | 7d | 2026-08-19 A | 2026-08-27 A | CON-LEG101-LR-8070, CON-LEG101-LR-7870, CON-LEG101-PR-1900 | 100% |  |
| CON-LEG101-LR-8500 |  | Installation of Low Voltage Distribution Panel [Local – 08 ] | 7d | 2027-07-04 | 2027-07-11 | CON-LEG101-LR-7970, CON-LEG101-LR-8070, CON-LEG101-PR-2550 |  | 17.7d |
|  | 10 | **Telecommunications** |  | 2026-07-07 | 2026-10-15 |  |  |  |
| CON-LEG101-LR-9020 |  | Installation of Concrete encased duct banks for primary network [Local – 08 ] | 8d | 2026-07-07 A | 2026-07-09 A | CON-LEG101-PR-3180, CON-LEG101-LR-8920, CON-LEG101-PR-1430 | 100% |  |
| CON-LEG101-LR-9320 |  | Installation of Concrete encased duct banks for for combined network of primary and secondary [Local – 08 ] | 5d | 2026-07-07 A | 2026-07-09 A | CON-LEG101-PR-3250, CON-LEG101-LR-9220, CON-LEG101-PR-1430, CON-LEG101-LR-8500 | 100% |  |
| CON-LEG101-LR-8920 |  | Installation of Sand and soil encased duct banks for primary network [Local – 08 ] | 8d | 2026-09-22 A | 2026-10-07 A | CON-LEG101-LR-7870, CON-LEG101-EN-3280, CON-LEG101-EN-3440 | 100% |  |
| CON-LEG101-LR-9120 |  | Installation of Sand encased duct banks for secondary network [Local – 08 ] | 5d | 2026-09-23 A | 2026-10-07 A | CON-LEG101-LR-9020, CON-LEG101-EN-3440 | 100% |  |
| CON-LEG101-LR-9220 |  | Installation of Sand and soil encased duct banks, for combined network of primary and secondary [Local – 08 ] | 4d | 2026-09-24 A | 2026-10-07 A | CON-LEG101-LR-9120, CON-LEG101-EN-3440 | 100% |  |
| CON-LEG101-LR-9420 |  | Installation of Reinforced concrete manhole [Local – 08 ] | 6d | 2026-09-26 A | 2026-10-15 A | CON-LEG101-LR-9320, CON-LEG101-PR-3260 | 100% |  |
|  | 11 | **CCTV feeding system and GSM** |  | 2026-07-05 | 2027-07-11 |  |  |  |
| CON-LEG101-LR-9930 |  | Installation of 25 Meters pole for CCTV Cameras [Local – 08 ] | 7d | 2026-07-05 A | 2026-07-11 A | CON-LEG101-LR-9820, CON-LEG101-PR-3870 | 100% |  |
| CON-LEG101-LR-10030 |  | Installation of Short Range wireless point to point wireless bridge [Local – 08 ] | 7d | 2026-07-25 A | 2026-09-24 A | CON-LEG101-LR-9930, CON-LEG101-PR-3910 | 100% |  |
| CON-LEG101-LR-9770 |  | Installation of Outdoor PTZ IP66 [Local – 08 ] | 3d | 2026-07-25 A | 2026-09-24 A | CON-LEG101-LR-8920, CON-LEG101-PR-3650 | 100% |  |
| CON-LEG101-LR-9820 |  | Installation of LED Screen 43" (24/7 operation) with Ethernet decoders [Local – 08 ] | 7d | 2027-07-04 | 2027-07-11 | CON-LEG101-PR-3950, CON-LEG101-LR-9770, CON-LEG101-PR-3290 |  | 17.7d |
|  | 12 | **Earthing System** |  | 2027-08-01 | 2027-08-03 |  |  |  |
| CON-LEG101-LR-8320 |  | Installation of Earthing for Distribution panels,SL feeder pillars, KWH, Unit substations and RMU [Local – 08 ] | 2d | 2027-08-01 | 2027-08-03 | CON-LEG101-LR-8470, CON-LEG101-LR-7570, CON-LEG101-LR-9420, CON-LEG101-LR-10030, CON-LEG101-PR-1480, CON-LEG101-LR-9770, CON-LEG101-PR-1310 |  | 0.5d |
|  | 9 | **Road Lighting** |  | 2026-04-19 | 2027-08-03 |  |  |  |
| CON-LEG101-LR-8170 |  | Installation of Lighting poles [Local – 08 ] | 7d | 2026-04-19 A | 2026-10-25 A | CON-LEG101-PR-1950, CON-LEG101-LR-7870, CON-LEG101-LR-8160 SS, CON-LEG101-PR-1910 | 100% |  |
| CON-LEG101-LR-7490 |  | Installation of Unit Substation Including concrete foundations and fencing [Local – 08 ] | 4d | 2026-07-18 A | 2027-07-26 | CON-LEG101-LR-8170, CON-LEG101-EN-3310, CON-LEG101-EN-3320, CON-LEG101-EN-3330, CON-LEG101-EN-3360, CON-LEG101-PR-1890 | 30% | 0.5d |
| CON-LEG101-LR-8270 |  | Installation of Street Lighting Luminaire [Local – 08 ] | 4d | 2026-08-22 A | 2026-10-25 A | CON-LEG101-LR-8170, CON-LEG101-PR-1920 | 100% |  |
| CON-LEG101-LR-8470 |  | Installation of Street Lighting feeder pillars / Lighting panels [Local – 08 ] | 4d | 2026-09-05 A | 2027-08-01 | CON-LEG101-LR-7570, CON-LEG101-LR-8170, CON-LEG101-PR-1940, CON-LEG101-PR-2550 | 90% | 0.5d |
| CON-LEG101-LR-7570 |  | Installation of Ring Main Unit RMU [Local – 08 ] | 4d | 2027-07-26 | 2027-07-31 | CON-LEG101-LR-7490, CON-LEG101-PR-2510 |  | 0.5d |
| CON-LEG101-LR-8420 |  | Installation of Earthing for Streetlighting feeders for every end pole circuits. [Local – 08 ] | 2d | 2027-08-01 | 2027-08-03 | CON-LEG101-LR-8470, CON-LEG101-LR-7570, CON-LEG101-LR-7490, CON-LEG101-PR-1480, CON-LEG101-LR-8270, CON-LEG101-PR-1310 |  | 17.4d |
|  | 3 | **Bridge** |  | 2026-01-17 | 2027-09-05 |  |  |  |
|  | 1 | **Substructure** |  | 2026-01-17 | 2026-08-01 |  |  |  |
|  | 1 | **Earth Work** |  | 2026-01-17 | 2026-08-01 |  |  |  |
| CON-LEG101-BR-1000 |  | Excavation for Bridge [Bridge ] | 21d | 2026-01-17 A | 2026-02-15 A | CON-LEG101-EN-1150, CON-LEG101-SD-1000, CON-LEG101-SD-1010, CON-LEG101-SD-1020, CON-LEG101-SD-1030, CON-LEG101-EN-3440 | 100% |  |
| CON-LEG101-BR-1010 |  | Parcrels Excavation for Bridge [Bridge ] | 21d | 2026-01-17 A | 2026-02-15 A | CON-LEG101-BR-1000, CON-LEG101-EN-3440 | 100% |  |
| CON-LEG101-BR-1240 |  | Embankments to the parcels for Bridge [Bridge ] | 14d | 2026-01-24 A | 2026-02-17 A | CON-LEG101-BR-1140, CON-LEG101-EN-3440 | 100% |  |
| CON-LEG101-BR-1140 |  | Embankments to the Bridge [Bridge ] | 15d | 2026-05-17 A | 2026-08-01 A | CON-LEG101-BR-1010, CON-LEG101-EN-3440 | 100% |  |
|  | 2 | **Piling** |  | 2026-01-18 | 2026-03-14 |  |  |  |
| CON-LEG101-BR-1020 |  | Reinforced concrete Piles [Bridge ] | 21d | 2026-01-18 A | 2026-03-14 A | CON-LEG101-BR-1000, CON-LEG101-EN-3560, CON-LEG101-EN-1150, CON-LEG101-EN-1150 FF, CON-LEG101-EN-1160, CON-LEG101-BR-1240 | 100% |  |
|  | 3 | **Pile Caps & Abutments** |  | 2026-02-15 | 2026-05-20 |  |  |  |
| CON-LEG101-BR-1030 |  | Reinforced concrete for pile caps and abutment [Bridge ] | 21d | 2026-02-15 A | 2026-03-28 A | CON-LEG101-BR-1020, CON-LEG101-EN-1170, CON-LEG101-EN-1160 | 100% |  |
| CON-LEG101-BR-1180 |  | Installation of Elastomeric Bearings [Bridge ] | 15d | 2026-03-01 A | 2026-05-20 A | CON-LEG101-BR-1030, CON-LEG101-PR-2240 | 100% |  |
|  | 2 | **Superstructure** |  | 2026-02-10 | 2026-08-17 |  |  |  |

| ID | WBS | Task | Duration | Start | Finish | Predecessors | Complete | Total float |
| --- | --- | --- | --- | --- | --- | --- | --- | --- |
|  | 1 | **Girder** |  | 2026-02-10 | 2026-06-23 |  |  |  |
|  | 1 | **Casting** |  | 2026-02-10 | 2026-04-26 |  |  |  |
| CON-LEG101-BR-1100 |  | Steel Reinforced Work | 21d | 2026-02-10 A | 2026-04-23 A | CON-LEG101-PR-1410, CON-LEG101-BR-1020, CON-LEG101-EN-1150, CON-LEG101-EN-1160, CON-LEG101-EN-1170 | 100% |  |
| CON-LEG101-BR-1110 |  | Formwork and Casting | 21d | 2026-03-16 A | 2026-04-26 A | CON-LEG101-BR-1100 | 100% |  |
|  | 2 | **Installation** |  | 2026-04-30 | 2026-06-23 |  |  |  |
| CON-LEG101-BR-1120 |  | Prestressing Strands | 21d | 2026-04-30 A | 2026-05-18 A | CON-LEG101-PR-2400, CON-LEG101-BR-1110, CON-LEG101-BR-1030, CON-LEG101-PR-2140, CON-LEG101-BR-1180 | 100% |  |
| CON-LEG101-BR-1130 |  | Installation of Girder | 21d | 2026-06-21 A | 2026-06-23 A | CON-LEG101-BR-1180, CON-LEG101-BR-1120, CON-LEG101-PR-2240, CON-LEG101-EN-1200 | 100% |  |
|  | 2 | **Slab Casting** |  | 2026-07-01 | 2026-08-17 |  |  |  |
|  | 1 | **Top Slabs** |  | 2026-07-01 | 2026-07-12 |  |  |  |
| CON-LEG101-BR-1050 |  | Formwork for Top Slab | 21d | 2026-07-01 A | 2026-07-09 A | CON-LEG101-BR-1130, CON-LEG101-PR-2410 | 100% |  |
| CON-LEG101-BR-1040 |  | Steel Reinforced Work for Top Slab | 21d | 2026-07-02 A | 2026-07-08 A | CON-LEG101-BR-1050, CON-LEG101-BR-1130, CON-LEG101-EN-1190, CON-LEG101-EN-1210 | 100% |  |
| CON-LEG101-BR-1060 |  | Casting Concrete & Treatment for Top Slab | 10d | 2026-07-12 A | 2026-07-12 A | CON-LEG101-BR-1040, CON-LEG101-BR-1050 | 100% |  |
|  | 2 | **Apron Slabs** |  | 2026-08-05 | 2026-08-17 |  |  |  |
| CON-LEG101-BR-1250 |  | Lean concrete For Apron Slab [Bridge ] | 4d | 2026-08-05 A | 2026-08-05 A | CON-LEG101-BR-1140, CON-LEG101-BR-1240, CON-LEG101-BR-1060 | 100% |  |
| CON-LEG101-BR-1070 |  | Steel Reinforced Work for Apron Slab | 15d | 2026-08-08 A | 2026-08-17 A | CON-LEG101-BR-1250, CON-LEG101-BR-1060, CON-LEG101-EN-1210, CON-LEG101-EN-1220 | 100% |  |
| CON-LEG101-BR-1080 |  | Formwork Work for Apron Slab | 15d | 2026-08-09 A | 2026-08-17 A | CON-LEG101-BR-1250, CON-LEG101-BR-1070 | 100% |  |
| CON-LEG101-BR-1090 |  | Casting Concrete Work & Treatment for Apron Slab | 6d | 2026-08-11 A | 2026-08-17 A | CON-LEG101-BR-1080 | 100% |  |
|  | 3 | **Bridge Finishing** |  | 2026-07-13 | 2027-09-05 |  |  |  |
| CON-LEG101-BR-1150 |  | Installation of New Jersey [Bridge ] | 20d | 2026-07-13 A | 2026-08-06 A | CON-LEG101-PR-2420, CON-LEG101-BR-1090, CON-LEG101-PR-2170, CON-LEG101-EN-1230, CON-LEG101-BR-1230 | 100% |  |
| CON-LEG101-BR-1270 |  | Installation of Lighting poles [Bridge ] | 18d | 2026-09-23 A | 2026-09-26 A | CON-LEG101-BR-1060, CON-LEG101-BR-1150, CON-LEG101-LR-8170 | 100% |  |
| CON-LEG101-BR-1210 |  | Installation of GRP Panel [Bridge ] | 10d | 2026-11-09 A | 2027-08-24 | CON-LEG101-BR-1260, CON-LEG101-BR-1200, CON-LEG101-PR-2330 | 20% | -43d |
| CON-LEG101-BR-1160 |  | Membrane waterproofing for concert in touch with soil and membrane waterproofing for bridge slab [Bridge ] | 10d | 2026-11-11 | 2026-11-22 | CON-LEG101-BR-1150 |  | 126d |
| CON-LEG101-BR-1170 |  | Placing of Protective Coating for Concrete Surfaces [Bridge ] | 13d | 2026-11-23 | 2026-12-07 | CON-LEG101-BR-1160 |  | 126d |
| CON-LEG101-BR-1260 |  | Asphalt Wearing Cource | 3d | 2026-12-08 | 2026-12-10 | CON-LEG101-BR-1170 |  | 126d |
| CON-LEG101-BR-1190 |  | Installation of expansion joints for bridges [Bridge ] | 14d | 2026-12-12 | 2026-12-27 | CON-LEG101-BR-1260, CON-LEG101-BR-1180, CON-LEG101-PR-2250 |  | 126d |
| CON-LEG101-BR-1200 |  | Installation of Guard Rail [Bridge ] | 20d | 2027-07-24 | 2027-08-15 | CON-LEG101-BR-1260, CON-LEG101-BR-1270, CON-LEG101-BR-1190, CON-LEG101-PR-2290 |  | -43d |
| CON-LEG101-BR-1220 |  | Installation of Logo MODON [Bridge ] | 10d | 2027-08-25 | 2027-09-05 | CON-LEG101-PR-2430, CON-LEG101-BR-1260, CON-LEG101-BR-1210, CON-LEG101-PR-2360 |  | -43d |
|  | 4 | **Drainage** |  | 2026-07-09 | 2026-07-11 |  |  |  |
|  | 1 | **Gully Installation** |  | 2026-07-09 | 2026-07-11 |  |  |  |
| CON-LEG101-BR-1230 |  | Installation of Bridge Gully (Scupper) drainage units [Bridge ] | 10d | 2026-07-09 A | 2026-07-11 A | CON-LEG101-PR-2410, CON-LEG101-BR-1060, CON-LEG101-PR-2390, CON-LEG101-BR-1080 | 100% |  |
|  | 4 | **Outside Boundary Area (Tie-in Lines)** |  | 2026-01-05 | 2027-07-11 |  |  |  |
|  | 1 | **Permits & Prepation works for Construction** |  | 2026-01-05 | 2026-04-16 |  |  |  |
| CON-LEG101-OBA-1230 |  | Permits for Starting Works | 20d | 2026-01-05 A | 2026-02-12 A | CON-LEG101-MS-1070, CON-LEG101-EN-1770, CON-LEG101-EN-1720, CON-LEG101-EN-1740, CON-LEG101-EN-1690, CON-LEG101-EN-1710 | 100% |  |
| CON-LEG101-OBA-1240 |  | As Built for Existing Utilites | 21d | 2026-01-07 A | 2026-02-14 A | CON-LEG101-OBA-1230 | 100% |  |
| CON-LEG101-OBA-1270 |  | Detour & Safety works | 10d | 2026-02-12 A | 2026-04-16 A | CON-LEG101-OBA-1260 | 100% |  |
| CON-LEG101-OBA-1250 |  | Submission of Engineering Works | 21d | 2026-02-15 A | 2026-04-09 A | CON-LEG101-OBA-1240 | 100% |  |
| CON-LEG101-OBA-1260 |  | Approval of Engineering Works | 12d | 2026-02-19 A | 2026-04-15 A | CON-LEG101-OBA-1250 | 100% |  |
|  | 4 | **Sanitary Sewerage** |  | 2026-02-14 | 2026-11-05 |  |  |  |
|  | 2 | **Pipe Work** |  | 2026-02-14 | 2026-05-11 |  |  |  |
| CON-LEG101-OBA-1080 |  | Excavation for Sanitary Sewerage Network [Outside Boundary Area ] | 21d | 2026-02-14 A | 2026-05-03 A | CON-LEG101-OBA-1270, CON-LEG101-SD-1000, CON-LEG101-SD-1010, CON-LEG101-SD-1020, CON-LEG101-SD-1030, CON-LEG101-EN-1750, CON-LEG101-EN-1760, CON-LEG101-EN-1770, CON-LEG101-EN-3440 | 100% |  |
| CON-LEG101-OBA-1090 |  | Granular bedding for Sanitary Sewerage Network [Outside Boundary Area ] | 18d | 2026-02-15 A | 2026-05-04 A | CON-LEG101-PR-2560, CON-LEG101-OBA-1080 | 100% |  |
| CON-LEG101-OBA-1100 |  | Installation of Pipe for Sanitary Sewerage Network [Outside Boundary Area ] | 21d | 2026-02-16 A | 2026-05-06 A | CON-LEG101-PR-2560, CON-LEG101-OBA-1090, CON-LEG101-PR-1720 | 100% |  |
| CON-LEG101-OBA-1120 |  | Granular Surround for Sanitary Sewerage Network [Outside Boundary Area ] | 18d | 2026-02-16 A | 2026-05-09 A | CON-LEG101-OBA-1110, CON-LEG101-EN-3450 | 100% |  |
| CON-LEG101-OBA-1110 |  | Testing for Sanitary Sewerage Network [Outside Boundary Area ] | 21d | 2026-03-10 A | 2026-05-07 A | CON-LEG101-OBA-1100 | 100% |  |
| CON-LEG101-OBA-1130 |  | Installation of Micron Marker Magnetic Tape [Outside Boundary Area ] | 7d | 2026-03-11 A | 2026-05-10 A | CON-LEG101-OBA-1120 | 100% |  |
| CON-LEG101-OBA-1140 |  | Backfilling to Subgrade Elevation [Outside Boundary Area ] | 18d | 2026-03-12 A | 2026-05-11 A | CON-LEG101-OBA-1130, CON-LEG101-EN-3440 | 100% |  |
|  | 1 | **Manhole** |  | 2026-02-14 | 2026-11-05 |  |  |  |
| CON-LEG101-OBA-1150 |  | Installation of Fiberglass Manholes [Outside Boundary Area ] | 21d | 2026-02-14 A | 2026-11-05 A | CON-LEG101-PR-2570, CON-LEG101-OBA-1090, CON-LEG101-PR-1750, CON-LEG101-OBA-1140 | 100% |  |
|  | 3 | **TSE Network** |  | 2026-05-05 | 2027-07-11 |  |  |  |
|  | 2 | **Pipe Work** |  | 2026-05-05 | 2026-07-02 |  |  |  |
| CON-LEG101-OBA-1000 |  | Excavation for TSE Network [Outside Boundary Area ] | 10d | 2026-05-05 A | 2026-06-16 A | CON-LEG101-OBA-1270, CON-LEG101-LR-2070, CON-LEG101-EN-1720, CON-LEG101-EN-1730, CON-LEG101-EN-1740, CON-LEG101-EN-1810, CON-LEG101-OBA-1150 | 100% |  |
| CON-LEG101-OBA-1010 |  | Granular bedding for TSE Network [Outside Boundary Area ] | 8d | 2026-05-07 A | 2026-06-17 A | CON-LEG101-OBA-1000 | 100% |  |
| CON-LEG101-OBA-1020 |  | Installation of Pipe for TSE Network [Outside Boundary Area ] | 11d | 2026-05-09 A | 2026-06-18 A | CON-LEG101-PR-2590, CON-LEG101-OBA-1010, CON-LEG101-PR-1690 | 100% |  |
| CON-LEG101-OBA-1040 |  | Granular Surround for TSE Network [Outside Boundary Area ] | 8d | 2026-05-20 A | 2026-06-20 A | CON-LEG101-OBA-1030, CON-LEG101-EN-3450 | 100% |  |
| CON-LEG101-OBA-1050 |  | Installation of Micron Marker Magnetic Tape [Outside Boundary Area ] | 3d | 2026-05-21 A | 2026-06-21 A | CON-LEG101-OBA-1040 | 100% |  |
| CON-LEG101-OBA-1060 |  | Backfilling to Subgrade Elevation [Outside Boundary Area ] | 15d | 2026-05-24 A | 2026-06-22 A | CON-LEG101-OBA-1050, CON-LEG101-EN-3440 | 100% |  |
| CON-LEG101-OBA-1030 |  | Testing for TSE Network [Outside Boundary Area ] | 8d | 2026-07-01 A | 2026-07-02 A | CON-LEG101-OBA-1020 | 100% |  |
|  | 1 | **Valves/Chamber** |  | 2026-06-13 | 2027-07-11 |  |  |  |
| CON-LEG101-OBA-1070 |  | Installation of Butterfly valves (In Chamber) [Outside Boundary Area ] | 6d | 2026-06-13 A | 2027-07-11 | CON-LEG101-OBA-1500, CON-LEG101-OBA-1020, CON-LEG101-PR-1970 | 98% | 5.18d |
| CON-LEG101-OBA-1500 |  | Installation of Valve Chamber [Outside Boundary Area ] | 10d | 2026-06-13 A | 2027-07-11 | CON-LEG101-OBA-1020, CON-LEG101-OBA-1060 SS | 98% | 5.18d |
|  | 5 | **Public Water Utility Distribution** |  | 2026-04-01 | 2026-11-14 |  |  |  |
|  | 3 | **Public Water Utility Distribution (0 - 900) m** |  | 2026-05-06 | 2026-11-12 |  |  |  |
|  | 2 | **Pipe Work** |  | 2026-05-06 | 2026-07-23 |  |  |  |
| CON-LEG101-OBA-1160 |  | Excavation for Public Water Utility Distribution Piping [Outside Boundary Area ] 0 - 900 m | 21d | 2026-05-06 A | 2026-06-18 A | CON-LEG101-OBA-1270, CON-LEG101-EN-1690, CON-LEG101-EN-1700, CON-LEG101-EN-1710, CON-LEG101-EN-3440 | 100% |  |
| CON-LEG101-OBA-1170 |  | Granular bedding for Public Water Utility Distribution Piping [Outside Boundary Area ] 0 - 900 m | 13d | 2026-05-10 A | 2026-06-27 A | CON-LEG101-OBA-1160 | 100% |  |
| CON-LEG101-OBA-1180 |  | Installation of Pipe for Public Water Utility Distribution Piping [Outside Boundary Area ] 0 - 900 m | 19d | 2026-05-12 A | 2026-06-28 A | CON-LEG101-PR-4010, CON-LEG101-OBA-1170, CON-LEG101-PR-1660 | 100% |  |
| CON-LEG101-OBA-1200 |  | Granular Surround for Public Water Utility Distribution Piping [Outside Boundary Area ] 0 - 900 m | 13d | 2026-07-04 A | 2026-07-05 A | CON-LEG101-OBA-1190, CON-LEG101-EN-3450 | 100% |  |
| CON-LEG101-OBA-1210 |  | Installation of Micron Marker Magnetic Tape [Outside Boundary Area ] 0 - 900 m | 3d | 2026-07-06 A | 2026-07-07 A | CON-LEG101-OBA-1200 | 100% |  |
| CON-LEG101-OBA-1220 |  | Backfilling to Subgrade Elevation [Outside Boundary Area ] 0 - 900 m | 10d | 2026-07-08 A | 2026-07-09 A | CON-LEG101-OBA-1210, CON-LEG101-EN-3440 | 100% |  |
| CON-LEG101-OBA-1190 |  | Testing for Public Water Utility Distribution Piping [Outside Boundary Area ] 0 - 900 m | 13d | 2026-07-22 A | 2026-07-23 A | CON-LEG101-OBA-1180 | 100% |  |

| ID | WBS | Task | Duration | Start | Finish | Predecessors | Complete | Total float |
| --- | --- | --- | --- | --- | --- | --- | --- | --- |
|  | 1 | **Valves/Chamber** |  | 2026-06-07 | 2026-11-12 |  |  |  |
| CON-LEG101-OBA-1420 |  | Installation of Air Valve chambers [Outside Boundary Area ] 0 - 900 m | 21d | 2026-06-07 A | 2026-11-12 | CON-LEG101-OBA-1180 | 95% | 201.21d |
| CON-LEG101-OBA-1430 |  | Installation of Air Valves [Outside Boundary Area ] 0 - 900 m | 10d | 2026-06-07 A | 2026-11-12 | CON-LEG101-OBA-1420 | 95% | 201.21d |
|  | 1 | **Public Water Utility Distribution (901 - 1800) m** |  | 2026-04-01 | 2026-11-14 |  |  |  |
| CON-LEG101-OBA-1460 |  | Permits for Starting Works for Area 901 - 1800 m | 12d | 2026-04-01 A | 2026-04-01 A | CON-LEG101-OBA-1420, CON-LEG101-OBA-1220, CON-LEG101-OBA-1430 | 100% |  |
| CON-LEG101-OBA-1470 |  | Detour & Safety works for Area 901 - 1800 m | 8d | 2026-04-02 A | 2026-04-04 A | CON-LEG101-OBA-1460 | 100% |  |
|  | 2 | **Pipe Work** |  | 2026-04-05 | 2026-09-06 |  |  |  |
| CON-LEG101-OBA-1280 |  | Excavation for Public Water Utility Distribution Piping [Outside Boundary Area ] 901 - 1800 m | 21d | 2026-04-05 A | 2026-05-05 A | CON-LEG101-OBA-1460, CON-LEG101-OBA-1470 | 100% |  |
| CON-LEG101-OBA-1290 |  | Granular bedding for Public Water Utility Distribution Piping [Outside Boundary Area ] 901 - 1800 m | 13d | 2026-04-21 A | 2026-05-10 A | CON-LEG101-OBA-1280 | 100% |  |
| CON-LEG101-OBA-1300 |  | Installation of Pipe for Public Water Utility Distribution Piping [Outside Boundary Area ] 901 - 1800 m | 21d | 2026-04-23 A | 2026-05-12 A | CON-LEG101-OBA-1290 | 100% |  |
| CON-LEG101-OBA-1320 |  | Granular Surround for Public Water Utility Distribution Piping [Outside Boundary Area ] 901 - 1800 m | 13d | 2026-05-13 A | 2026-05-18 A | CON-LEG101-OBA-1310 | 100% |  |
| CON-LEG101-OBA-1330 |  | Installation of Micron Marker Magnetic Tape [Outside Boundary Area ] 901 - 1800 m | 3d | 2026-05-19 A | 2026-05-20 A | CON-LEG101-OBA-1320 | 100% |  |
| CON-LEG101-OBA-1340 |  | Backfilling to Subgrade Elevation [Outside Boundary Area ] 901 - 1800 m | 10d | 2026-05-21 A | 2026-05-23 A | CON-LEG101-OBA-1330 | 100% |  |
| CON-LEG101-OBA-1310 |  | Testing for Public Water Utility Distribution Piping [Outside Boundary Area ] 901 - 1800 m | 13d | 2026-07-25 A | 2026-09-06 A | CON-LEG101-OBA-1300 | 100% |  |
|  | 1 | **Valves/Chamber** |  | 2026-06-03 | 2026-11-14 |  |  |  |
| CON-LEG101-OBA-1440 |  | Installation of Air Valve chambers [Outside Boundary Area ] 901 - 1800 m | 21d | 2026-06-03 A | 2026-11-12 | CON-LEG101-OBA-1300 | 98% | 201.21d |
| CON-LEG101-OBA-1450 |  | Installation of Air Valves [Outside Boundary Area ] 901 - 1800 m | 10d | 2026-08-01 A | 2026-11-14 | CON-LEG101-OBA-1440 | 98% | 201.21d |
| CON-LEG101-OBA-1510 |  | Installation of Butterfly valves, on pipe with diameter 400 mm | 6d | 2026-08-03 A | 2026-11-14 | CON-LEG101-OBA-1340, CON-LEG101-OBA-1450 | 98% | 201.21d |
|  | 2 | **Public Water Utility Distribution (1801 - 2780) m** |  | 2026-04-25 | 2026-09-07 |  |  |  |
| CON-LEG101-OBA-1490 |  | Permits for Starting Works for Area 1800 - 2780 m | 12d | 2026-04-25 A | 2026-04-25 A | CON-LEG101-OBA-1440, CON-LEG101-OBA-1340, CON-LEG101-OBA-1070 SS, CON-LEG101-OBA-1510 | 100% |  |
| CON-LEG101-OBA-1480 |  | Detour & Safety works for Area 1800 - 2780 m | 8d | 2026-04-26 A | 2026-04-27 A | CON-LEG101-OBA-1490 | 100% |  |
|  | 2 | **Pipe Work** |  | 2026-04-28 | 2026-09-07 |  |  |  |
| CON-LEG101-OBA-1350 |  | Excavation for Public Water Utility Distribution Piping [Outside Boundary Area ] 1800 - 2780 m | 15d | 2026-04-28 A | 2026-09-01 A | CON-LEG101-OBA-1480 | 100% |  |
| CON-LEG101-OBA-1360 |  | Granular bedding for Public Water Utility Distribution Piping [Outside Boundary Area ] 1800 - 2780 m | 13d | 2026-06-27 A | 2026-09-01 A | CON-LEG101-OBA-1350 | 100% |  |
| CON-LEG101-OBA-1370 |  | Installation of Pipe for Public Water Utility Distribution Piping [Outside Boundary Area ] 1800 - 2780 m | 21d | 2026-06-30 A | 2026-09-02 A | CON-LEG101-OBA-1360 | 100% |  |
| CON-LEG101-OBA-1390 |  | Granular Surround for Public Water Utility Distribution Piping [Outside Boundary Area ] 1800 - 2780 m | 13d | 2026-07-02 A | 2026-09-02 A | CON-LEG101-OBA-1380 | 100% |  |
| CON-LEG101-OBA-1400 |  | Installation of Micron Marker Magnetic Tape [Outside Boundary Area ] 1800 - 2780 m | 3d | 2026-07-04 A | 2026-09-03 A | CON-LEG101-OBA-1390 | 100% |  |
| CON-LEG101-OBA-1410 |  | Backfilling to Subgrade Elevation [Outside Boundary Area ] 1800 - 2780 m | 10d | 2026-07-05 A | 2026-09-03 A | CON-LEG101-OBA-1400 | 100% |  |
| CON-LEG101-OBA-1380 |  | Testing for Public Water Utility Distribution Piping [Outside Boundary Area ] 1800 - 2780 m | 13d | 2026-09-07 A | 2026-09-07 A | CON-LEG101-OBA-1370 | 100% |  |
|  | 8 | **Roads Finishing** |  | 2026-05-06 | 2027-12-29 |  |  |  |
|  | 1 | **Local – 01** |  | 2026-05-06 | 2027-11-22 |  |  |  |
|  | 1 | **LOCAL - 01 Segment-01 (From 0+000 to 1+066)** |  | 2026-05-06 | 2027-10-13 |  |  |  |
|  | 7 | **Concrete Curb** |  | 2026-05-06 | 2026-10-22 |  |  |  |
| CON-LEG101-LR-6180 |  | Installation of Precast Concrete Curb [Local – 01 Segment-01] | 18d | 2026-05-06 A | 2026-10-22 A | CON-LEG101-LR-5880, CON-LEG101-LR-2070, CON-LEG101-LR-10740, CON-LEG101-LR-8080, CON-LEG101-LR-7880, CON-LEG101-LR-2470, CON-LEG101-LR-9340, CON-LEG101-LR-8290, CON-LEG101-PR-1320, CON-LEG101-PR-1930, CON-LEG101-LR-7980, CON-LEG101-PR-2550, CON-LEG101-PR-1540 | 100% |  |
|  | 1 | **Asphalt Wearing Course** |  | 2026-09-29 | 2027-08-17 |  |  |  |
| CON-LEG101-LR-5980 |  | Tack coat (RC2) [Local – 01 Segment-01] | 6d | 2026-09-29 A | 2027-08-15 | CON-LEG101-LR-6180, CON-LEG101-LR-5880 | 70% | -61.85d |
| CON-LEG101-LR-6080 |  | Bituminous wearing course [Local – 01 Segment-01] | 6d | 2026-09-29 A | 2027-08-17 | CON-LEG101-LR-5980, CON-LEG101-PR-1510, CON-LEG101-EN-3470 | 70% | -61.85d |
|  | 3 | **Interlocking block roads/on-street parking** |  | 2026-06-13 | 2026-10-12 |  |  |  |
| CON-LEG101-LR-6380 |  | Interlocking block pavers for roads/on-street parking [Local – 01 Segment-01] | 19d | 2026-06-13 A | 2026-10-12 A | CON-LEG101-LR-6180, CON-LEG101-LR-6080, CON-LEG101-EN-3450, CON-LEG101-MS-1140, CON-LEG101-MS-1140 FF | 100% |  |
|  | 4 | **Interlocking block sidewalk/footpath** |  | 2026-06-26 | 2026-10-26 |  |  |  |
| CON-LEG101-LR-6280 |  | Interlocking block pavers for sidewalk/footpath [Local – 01 Segment-01] | 19d | 2026-06-26 A | 2026-10-26 A | CON-LEG101-LR-6180, CON-LEG101-LR-6380, CON-LEG101-PR-1570 | 100% |  |
|  | 5 | **Pavement Markings** |  | 2027-09-04 | 2027-09-22 |  |  |  |
| CON-LEG101-LR-6580 |  | Pavement Markings (White Paint/Yellow Paint) [Local – 01 Segment-01] | 6d | 2027-09-04 | 2027-09-11 | CON-LEG101-PR-2070, CON-LEG101-LR-6180 SS, CON-LEG101-LR-6080, CON-LEG101-PR-1600 |  | -77.25d |
| CON-LEG101-LR-6680 |  | Handicap ramp [Local – 01 Segment-01] | 10d | 2027-09-11 | 2027-09-22 | CON-LEG101-LR-6580, CON-LEG101-PR-2600 |  | -72.25d |
|  | 6 | **Traffic Signs** |  | 2026-07-05 | 2027-10-13 |  |  |  |
| CON-LEG101-LR-6780 |  | Installation of Traffic Signs [Local – 01 Segment-01] | 19d | 2026-07-05 A | 2027-10-13 | CON-LEG101-PR-2060, CON-LEG101-LR-6480, CON-LEG101-PR-1630 | 60% | -51.05d |
| CON-LEG101-LR-6480 |  | Retroreflective Plastic Cones [Local – 01 Segment-01] | 9d | 2027-09-22 | 2027-10-04 | CON-LEG101-PR-2060, CON-LEG101-LR-6680, CON-LEG101-PR-1630 |  | -71.25d |
|  | 2 | **LOCAL - 01 Segment-02 (From 1+066 to 2+133)** |  | 2026-05-12 | 2027-10-30 |  |  |  |
|  | 7 | **Concrete Curb** |  | 2026-05-12 | 2026-06-21 |  |  |  |
| CON-LEG101-LR-6190 |  | Installation of Precast Concrete Curb [Local – 01 Segment-02] | 20d | 2026-05-12 A | 2026-06-21 A | CON-LEG101-LR-5890, CON-LEG101-LR-2090, CON-LEG101-LR-10750, CON-LEG101-LR-7890, CON-LEG101-LR-8090, CON-LEG101-LR-2480, CON-LEG101-LR-9350, CON-LEG101-LR-8300, CON-LEG101-LR-6180, CON-LEG101-PR-1320, CON-LEG101-LR-7990, CON-LEG101-PR-1930, CON-LEG101-PR-1540 | 100% |  |
|  | 1 | **Asphalt Wearing Course** |  | 2026-09-29 | 2027-08-21 |  |  |  |
| CON-LEG101-LR-5990 |  | Tack coat (RC2) [Local – 01 Segment-02] | 6d | 2026-09-29 A | 2027-08-19 | CON-LEG101-LR-6190, CON-LEG101-LR-5890, CON-LEG101-LR-6080 | 70% | -49.05d |
| CON-LEG101-LR-6090 |  | Bituminous wearing course [Local – 01 Segment-02] | 6d | 2026-09-29 A | 2027-08-21 | CON-LEG101-LR-5990, CON-LEG101-PR-1510, CON-LEG101-EN-3470 | 70% | -49.05d |
|  | 3 | **Interlocking block roads/on-street parking** |  | 2026-07-01 | 2026-07-20 |  |  |  |
| CON-LEG101-LR-6390 |  | Interlocking block pavers for roads/on-street parking [Local – 01 Segment-02] | 10d | 2026-07-01 A | 2026-07-20 A | CON-LEG101-LR-6190, CON-LEG101-LR-6090, CON-LEG101-EN-3450, CON-LEG101-LR-6280 | 100% |  |
|  | 4 | **Interlocking block sidewalk/footpath** |  | 2026-07-01 | 2026-07-20 |  |  |  |
| CON-LEG101-LR-6290 |  | Interlocking block pavers for sidewalk/footpath [Local – 01 Segment-02] | 10d | 2026-07-01 A | 2026-07-20 A | CON-LEG101-LR-6190, CON-LEG101-LR-6390, CON-LEG101-PR-1570 | 100% |  |
|  | 5 | **Pavement Markings** |  | 2027-09-11 | 2027-10-11 |  |  |  |
| CON-LEG101-LR-6590 |  | Pavement Markings (White Paint/Yellow Paint) [Local – 01 Segment-02] | 15d | 2027-09-11 | 2027-09-29 | CON-LEG101-PR-2070, CON-LEG101-LR-6190, CON-LEG101-PR-1600, CON-LEG101-LR-6580 |  | -77.25d |
| CON-LEG101-LR-6690 |  | Handicap ramp [Local – 01 Segment-02] | 10d | 2027-09-29 | 2027-10-11 | CON-LEG101-LR-6590, CON-LEG101-PR-2600, CON-LEG101-LR-6680 |  | -77.25d |
|  | 6 | **Traffic Signs** |  | 2026-07-06 | 2027-10-30 |  |  |  |
| CON-LEG101-LR-6790 |  | Installation of Traffic Signs [Local – 01 Segment-02] | 21d | 2026-07-06 A | 2027-10-30 | CON-LEG101-PR-2060, CON-LEG101-LR-6490, CON-LEG101-PR-1630, CON-LEG101-LR-6780 | 80% | -61.45d |
| CON-LEG101-LR-6490 |  | Retroreflective Plastic Cones [Local – 01 Segment-02] | 12d | 2027-10-11 | 2027-10-25 | CON-LEG101-PR-2060, CON-LEG101-LR-6690, CON-LEG101-PR-1630, CON-LEG101-LR-6480 |  | -77.25d |
|  | 3 | **LOCAL - 01 Segment-03 (From 2+133 to 3+200)** |  | 2026-07-11 | 2027-11-22 |  |  |  |
|  | 7 | **Concrete Curb** |  | 2026-07-21 | 2026-09-16 |  |  |  |
| CON-LEG101-LR-6200 |  | Installation of Precast Concrete Curb [Local – 01 Segment-03] | 21d | 2026-07-21 A | 2026-09-16 A | CON-LEG101-LR-5900, CON-LEG101-LR-2100, CON-LEG101-LR-10760, CON-LEG101-LR-7900, CON-LEG101-LR-8000, CON-LEG101-LR-8100, CON-LEG101-LR-8300, CON-LEG101-LR-9350, CON-LEG101-LR-2480, CON-LEG101-LR-6190, CON-LEG101-PR-1540 | 100% |  |
|  | 1 | **Asphalt Wearing Course** |  | 2026-10-24 | 2027-08-22 |  |  |  |
| CON-LEG101-LR-6000 |  | Tack coat (RC2) [Local – 01 Segment-03] | 4d | 2026-10-24 A | 2027-08-22 | CON-LEG101-LR-6200, CON-LEG101-LR-5900, CON-LEG101-LR-6090 | 90% | -49.05d |
| CON-LEG101-LR-6100 |  | Bituminous wearing course [Local – 01 Segment-03] | 4d | 2026-10-24 A | 2027-08-22 | CON-LEG101-LR-6000, CON-LEG101-PR-1510, CON-LEG101-EN-3470 | 90% | -49.05d |
|  | 3 | **Interlocking block roads/on-street parking** |  | 2026-08-22 | 2026-09-19 |  |  |  |

| ID | WBS | Task | Duration | Start | Finish | Predecessors | Complete | Total float |
| --- | --- | --- | --- | --- | --- | --- | --- | --- |
| CON-LEG101-LR-6400 |  | Interlocking block pavers for roads/on-street parking [Local – 01 Segment-03] | 18d | 2026-08-22 A | 2026-09-19 A | CON-LEG101-LR-6200, CON-LEG101-LR-6100, CON-LEG101-LR-5700 SS, CON-LEG101-EN-3450, CON-LEG101-LR-6290 | 100% |  |
|  | 4 | **Interlocking block sidewalk/footpath** |  | 2026-08-22 | 2026-09-20 |  |  |  |
| CON-LEG101-LR-6300 |  | Interlocking block pavers for sidewalk/footpath [Local – 01 Segment-03] | 19d | 2026-08-22 A | 2026-09-20 A | CON-LEG101-LR-6200, CON-LEG101-LR-6400, CON-LEG101-PR-1570 | 100% |  |
|  | 5 | **Pavement Markings** |  | 2027-09-29 | 2027-10-25 |  |  |  |
| CON-LEG101-LR-6600 |  | Pavement Markings (White Paint/Yellow Paint) [Local – 01 Segment-03] | 10d | 2027-09-29 | 2027-10-11 | CON-LEG101-PR-2070, CON-LEG101-LR-6200, CON-LEG101-PR-1600, CON-LEG101-LR-6590 |  | -77.25d |
| CON-LEG101-LR-6700 |  | Handicap ramp [Local – 01 Segment-03] | 12d | 2027-10-11 | 2027-10-25 | CON-LEG101-LR-6600, CON-LEG101-PR-2600, CON-LEG101-LR-6690 |  | -77.25d |
|  | 6 | **Traffic Signs** |  | 2026-07-11 | 2027-11-22 |  |  |  |
| CON-LEG101-LR-6800 |  | Installation of Traffic Signs [Local – 01 Segment-03] | 21d | 2026-07-11 A | 2027-11-22 | CON-LEG101-PR-2060, CON-LEG101-LR-6500, CON-LEG101-PR-1630, CON-LEG101-LR-6790 | 80% | -77.25d |
| CON-LEG101-LR-6500 |  | Retroreflective Plastic Cones [Local – 01 Segment-03] | 20d | 2027-10-25 | 2027-11-17 | CON-LEG101-PR-2060, CON-LEG101-LR-6700, CON-LEG101-PR-1630, CON-LEG101-LR-6490 |  | -77.25d |
|  | 2 | **Local – 02** |  | 2026-06-09 | 2027-11-20 |  |  |  |
|  | 7 | **Concrete Curb** |  | 2026-06-09 | 2026-06-24 |  |  |  |
| CON-LEG101-LR-6210 |  | Installation of Precast Concrete Curb [Local – 02 ] | 15d | 2026-06-09 A | 2026-06-24 A | CON-LEG101-LR-5910, CON-LEG101-LR-2110, CON-LEG101-LR-10770, CON-LEG101-LR-7910, CON-LEG101-LR-8110, CON-LEG101-LR-2490, CON-LEG101-LR-9360, CON-LEG101-LR-8310, CON-LEG101-PR-1540 | 100% |  |
|  | 1 | **Asphalt Wearing Course** |  | 2026-10-04 | 2026-10-31 |  |  |  |
| CON-LEG101-LR-6010 |  | Tack coat (RC2) [Local – 02 ] | 2d | 2026-10-04 A | 2026-10-31 A | CON-LEG101-LR-6210, CON-LEG101-LR-5910, CON-LEG101-LR-6100 | 100% |  |
| CON-LEG101-LR-6110 |  | Bituminous wearing course [Local – 02 ] | 3d | 2026-10-04 A | 2026-10-31 A | CON-LEG101-LR-6010, CON-LEG101-PR-1510, CON-LEG101-EN-3470 | 100% |  |
|  | 3 | **Interlocking block roads/on-street parking** |  | 2026-07-18 | 2026-07-28 |  |  |  |
| CON-LEG101-LR-6410 |  | Interlocking block pavers for roads/on-street parking [Local – 02 ] | 21d | 2026-07-18 A | 2026-07-28 A | CON-LEG101-LR-6210, CON-LEG101-LR-6110, CON-LEG101-LR-5710, CON-LEG101-EN-3450 | 100% |  |
|  | 4 | **Interlocking block sidewalk/footpath** |  | 2026-07-18 | 2027-08-26 |  |  |  |
| CON-LEG101-LR-6310 |  | Interlocking block pavers for sidewalk/footpath [Local – 02 ] | 21d | 2026-07-18 A | 2027-08-26 | CON-LEG101-LR-6210, CON-LEG101-LR-6410, CON-LEG101-PR-1570 | 80% | -3.25d |
|  | 5 | **Pavement Markings** |  | 2027-10-11 | 2027-11-03 |  |  |  |
| CON-LEG101-LR-6610 |  | Pavement Markings (White Paint/Yellow Paint) [Local – 02 ] | 10d | 2027-10-11 | 2027-10-23 | CON-LEG101-PR-2070, CON-LEG101-LR-6210, CON-LEG101-PR-1600, CON-LEG101-LR-6600 |  | -75.25d |
| CON-LEG101-LR-6710 |  | Handicap ramp [Local – 02 ] | 10d | 2027-10-23 | 2027-11-03 | CON-LEG101-LR-6610, CON-LEG101-PR-2600 |  | -75.25d |
|  | 6 | **Traffic Signs** |  | 2026-07-07 | 2027-11-20 |  |  |  |
| CON-LEG101-LR-6810 |  | Installation of Traffic Signs [Local – 02 ] | 21d | 2026-07-07 A | 2027-11-20 | CON-LEG101-PR-2060, CON-LEG101-LR-6510, CON-LEG101-PR-1630 | 80% | -75.25d |
| CON-LEG101-LR-6510 |  | Retroreflective Plastic Cones [Local – 02 ] | 10d | 2027-11-03 | 2027-11-15 | CON-LEG101-PR-2060, CON-LEG101-LR-6710, CON-LEG101-PR-1630 |  | -75.25d |
|  | 3 | **Local – 03** |  | 2026-07-08 | 2027-10-17 |  |  |  |
|  | 7 | **Concrete Curb** |  | 2026-10-04 | 2026-10-29 |  |  |  |
| CON-LEG101-LR-6220 |  | Installation of Precast Concrete Curb [Local – 03 ] | 21d | 2026-10-04 A | 2026-10-29 A | CON-LEG101-LR-5920, CON-LEG101-LR-2120, CON-LEG101-LR-10780, CON-LEG101-LR-7920, CON-LEG101-LR-8120, CON-LEG101-LR-2500, CON-LEG101-LR-9370, CON-LEG101-LR-6210, CON-LEG101-PR-1540 | 100% |  |
|  | 1 | **Asphalt Wearing Course** |  | 2026-11-07 | 2027-08-23 |  |  |  |
| CON-LEG101-LR-6020 |  | Tack coat (RC2) [Local – 03 ] | 2d | 2026-11-07 A | 2027-08-23 | CON-LEG101-LR-6220, CON-LEG101-LR-5920, CON-LEG101-LR-6110 | 80% | -49.05d |
| CON-LEG101-LR-6120 |  | Bituminous wearing course [Local – 03 ] | 3d | 2026-11-07 A | 2027-08-23 | CON-LEG101-LR-6020, CON-LEG101-PR-1510, CON-LEG101-EN-3470 | 80% | -49.05d |
|  | 3 | **Interlocking block roads/on-street parking** |  | 2026-10-27 | 2026-10-31 |  |  |  |
| CON-LEG101-LR-6420 |  | Interlocking block pavers for roads/on-street parking [Local – 03 ] | 21d | 2026-10-27 A | 2026-10-31 A | CON-LEG101-LR-6220, CON-LEG101-LR-6120, CON-LEG101-LR-5720, CON-LEG101-EN-3450 | 100% |  |
|  | 4 | **Interlocking block sidewalk/footpath** |  | 2026-10-19 | 2026-10-31 |  |  |  |
| CON-LEG101-LR-6320 |  | Interlocking block pavers for sidewalk/footpath [Local – 03 ] | 21d | 2026-10-19 A | 2026-10-31 A | CON-LEG101-LR-6220, CON-LEG101-LR-6420, CON-LEG101-PR-1570 | 100% |  |
|  | 5 | **Pavement Markings** |  | 2027-09-04 | 2027-09-28 |  |  |  |
| CON-LEG101-LR-6620 |  | Pavement Markings (White Paint/Yellow Paint) [Local – 03 ] | 10d | 2027-09-04 | 2027-09-15 | CON-LEG101-PR-2070, CON-LEG101-LR-6220, CON-LEG101-LR-6120, CON-LEG101-PR-1600 |  | -46.05d |
| CON-LEG101-LR-6720 |  | Handicap ramp [Local – 03 ] | 10d | 2027-09-15 | 2027-09-28 | CON-LEG101-LR-6620, CON-LEG101-PR-2600 |  | -46.05d |
|  | 6 | **Traffic Signs** |  | 2026-07-08 | 2027-10-17 |  |  |  |
| CON-LEG101-LR-6820 |  | Installation of Traffic Signs [Local – 03 ] | 20d | 2026-07-08 A | 2027-10-17 | CON-LEG101-PR-2060, CON-LEG101-LR-6520, CON-LEG101-PR-1630 | 70% | -46.05d |
| CON-LEG101-LR-6520 |  | Retroreflective Plastic Cones [Local – 03 ] | 10d | 2027-09-28 | 2027-10-10 | CON-LEG101-PR-2060, CON-LEG101-LR-6720, CON-LEG101-PR-1630 |  | -46.05d |
|  | 4 | **Local – 04** |  | 2027-10-10 | 2027-12-29 |  |  |  |
|  | 7 | **Concrete Curb** |  | 2027-10-10 | 2027-11-02 |  |  |  |
| CON-LEG101-LR-6230 |  | Installation of Precast Concrete Curb [Local – 04 ] | 21d | 2027-10-10 | 2027-11-02 | CON-LEG101-LR-5930, CON-LEG101-LR-2130, CON-LEG101-LR-10790, CON-LEG101-LR-7930, CON-LEG101-LR-8130, CON-LEG101-LR-2510, CON-LEG101-LR-9380, CON-LEG101-LR-6220, CON-LEG101-PR-1540 |  | -147.5d |
|  | 1 | **Asphalt Wearing Course** |  | 2027-11-03 | 2027-11-08 |  |  |  |
| CON-LEG101-LR-6030 |  | Tack coat (RC2) [Local – 04 ] | 2d | 2027-11-03 | 2027-11-04 | CON-LEG101-LR-6230, CON-LEG101-LR-5930, CON-LEG101-LR-6120 |  | -109.4d |
| CON-LEG101-LR-6130 |  | Bituminous wearing course [Local – 04 ] | 3d | 2027-11-06 | 2027-11-08 | CON-LEG101-LR-6030, CON-LEG101-PR-1510, CON-LEG101-EN-3470 |  | -109.4d |
|  | 3 | **Interlocking block roads/on-street parking** |  | 2027-11-09 | 2027-11-30 |  |  |  |
| CON-LEG101-LR-6430 |  | Interlocking block pavers for roads/on-street parking [Local – 04 ] | 19d | 2027-11-09 | 2027-11-30 | CON-LEG101-LR-6230, CON-LEG101-LR-6130, CON-LEG101-LR-5730, CON-LEG101-EN-3450 |  | -103.4d |
|  | 4 | **Interlocking block sidewalk/footpath** |  | 2027-12-01 | 2027-12-22 |  |  |  |
| CON-LEG101-LR-6330 |  | Interlocking block pavers for sidewalk/footpath [Local – 04 ] | 19d | 2027-12-01 | 2027-12-22 | CON-LEG101-LR-6230, CON-LEG101-LR-6430, CON-LEG101-PR-1570 |  | -103.4d |
|  | 5 | **Pavement Markings** |  | 2027-11-09 | 2027-12-01 |  |  |  |
| CON-LEG101-LR-6630 |  | Pavement Markings (White Paint/Yellow Paint) [Local – 04 ] | 10d | 2027-11-09 | 2027-11-20 | CON-LEG101-PR-2070, CON-LEG101-LR-6130, CON-LEG101-LR-6230, CON-LEG101-LR-6130 FF, CON-LEG101-PR-1600 |  | -109.4d |
| CON-LEG101-LR-6730 |  | Handicap ramp [Local – 04 ] | 10d | 2027-11-21 | 2027-12-01 | CON-LEG101-LR-6630, CON-LEG101-PR-2600 |  | -109.4d |
|  | 6 | **Traffic Signs** |  | 2027-12-02 | 2027-12-29 |  |  |  |
| CON-LEG101-LR-6530 |  | Retroreflective Plastic Cones [Local – 04 ] | 10d | 2027-12-02 | 2027-12-13 | CON-LEG101-PR-2060, CON-LEG101-LR-6730, CON-LEG101-PR-1630 |  | -109.4d |
| CON-LEG101-LR-6830 |  | Installation of Traffic Signs [Local – 04 ] | 14d | 2027-12-14 | 2027-12-29 | CON-LEG101-PR-2060, CON-LEG101-LR-6530, CON-LEG101-PR-1630 |  | -109.4d |
|  | 5 | **Local – 05** |  | 2026-05-24 | 2027-12-11 |  |  |  |
|  | 7 | **Concrete Curb** |  | 2026-05-24 | 2026-06-28 |  |  |  |
| CON-LEG101-LR-6240 |  | Installation of Precast Concrete Curb [Local – 05 ] | 16d | 2026-05-24 A | 2026-06-28 A | CON-LEG101-LR-5940, CON-LEG101-LR-2140, CON-LEG101-LR-10800, CON-LEG101-LR-7940, CON-LEG101-LR-8140, CON-LEG101-LR-2520, CON-LEG101-LR-9390, CON-LEG101-LR-6230, CON-LEG101-PR-1540 | 100% |  |
|  | 1 | **Asphalt Wearing Course** |  | 2026-10-03 | 2026-11-07 |  |  |  |
| CON-LEG101-LR-6040 |  | Tack coat (RC2) [Local – 05 ] | 2d | 2026-10-03 A | 2026-11-07 A | CON-LEG101-LR-6240, CON-LEG101-LR-5940, CON-LEG101-LR-6130 | 100% |  |
| CON-LEG101-LR-6140 |  | Bituminous wearing course [Local – 05 ] | 3d | 2026-10-03 A | 2026-11-07 A | CON-LEG101-LR-6040, CON-LEG101-PR-1510, CON-LEG101-EN-3470 | 100% |  |
|  | 3 | **Interlocking block roads/on-street parking** |  | 2026-07-13 | 2026-07-29 |  |  |  |
| CON-LEG101-LR-6440 |  | Interlocking block pavers for roads/on-street parking [Local – 05 ] | 18d | 2026-07-13 A | 2026-07-29 A | CON-LEG101-LR-6240, CON-LEG101-LR-6140, CON-LEG101-LR-5740, CON-LEG101-EN-3450 | 100% |  |
|  | 4 | **Interlocking block sidewalk/footpath** |  | 2026-07-13 | 2026-07-29 |  |  |  |
| CON-LEG101-LR-6340 |  | Interlocking block pavers for sidewalk/footpath [Local – 05 ] | 19d | 2026-07-13 A | 2026-07-29 A | CON-LEG101-LR-6240, CON-LEG101-LR-6440, CON-LEG101-PR-1570 | 100% |  |
|  | 5 | **Pavement Markings** |  | 2027-11-09 | 2027-12-01 |  |  |  |
| CON-LEG101-LR-6640 |  | Pavement Markings (White Paint/Yellow Paint) [Local – 05 ] | 10d | 2027-11-09 | 2027-11-20 | CON-LEG101-PR-2070, CON-LEG101-LR-6140, CON-LEG101-LR-6240, CON-LEG101-LR-6140 FF, CON-LEG101-PR-1600 |  | -92.6d |
| CON-LEG101-LR-6740 |  | Handicap ramp [Local – 05 ] | 10d | 2027-11-21 | 2027-12-01 | CON-LEG101-LR-6640, CON-LEG101-PR-2600 |  | -92.6d |

| ID | WBS | Task | Duration | Start | Finish | Predecessors | Complete | Total float |
| --- | --- | --- | --- | --- | --- | --- | --- | --- |
|  | 6 | **Traffic Signs** |  | 2026-07-09 | 2027-12-11 |  |  |  |
| CON-LEG101-LR-6840 |  | Installation of Traffic Signs [Local – 05 ] | 11d | 2026-07-09 A | 2027-12-11 | CON-LEG101-PR-2060, CON-LEG101-LR-6540, CON-LEG101-PR-1630 | 80% | -92.6d |
| CON-LEG101-LR-6540 |  | Retroreflective Plastic Cones [Local – 05 ] | 5d | 2027-12-02 | 2027-12-07 | CON-LEG101-PR-2060, CON-LEG101-LR-6740, CON-LEG101-PR-1630 |  | -92.6d |
|  | 6 | **Local – 06** |  | 2026-06-10 | 2027-12-09 |  |  |  |
|  | 7 | **Concrete Curb** |  | 2026-06-10 | 2026-07-15 |  |  |  |
| CON-LEG101-LR-6250 |  | Installation of Precast Concrete Curb [Local – 06 ] | 21d | 2026-06-10 A | 2026-07-15 A | CON-LEG101-LR-5950, CON-LEG101-LR-2150, CON-LEG101-LR-10810, CON-LEG101-LR-7950, CON-LEG101-LR-8050, CON-LEG101-LR-8150, CON-LEG101-LR-2530, CON-LEG101-LR-9400, CON-LEG101-LR-6240, CON-LEG101-PR-1540 | 100% |  |
|  | 1 | **Asphalt Wearing Course** |  | 2026-10-06 | 2026-11-01 |  |  |  |
| CON-LEG101-LR-6050 |  | Tack coat (RC2) [Local – 06 ] | 3d | 2026-10-06 A | 2026-11-01 A | CON-LEG101-LR-6250, CON-LEG101-LR-5950, CON-LEG101-LR-6140 | 100% |  |
| CON-LEG101-LR-6150 |  | Bituminous wearing course [Local – 06 ] | 2d | 2026-10-06 A | 2026-11-01 A | CON-LEG101-LR-6050, CON-LEG101-PR-1510, CON-LEG101-EN-3470 | 100% |  |
|  | 3 | **Interlocking block roads/on-street parking** |  | 2026-07-19 | 2026-08-20 |  |  |  |
| CON-LEG101-LR-6450 |  | Interlocking block pavers for roads/on-street parking [Local – 06 ] | 19d | 2026-07-19 A | 2026-08-20 A | CON-LEG101-LR-6250, CON-LEG101-LR-6150, CON-LEG101-LR-5750, CON-LEG101-EN-3450 | 100% |  |
|  | 4 | **Interlocking block sidewalk/footpath** |  | 2026-07-19 | 2026-08-20 |  |  |  |
| CON-LEG101-LR-6350 |  | Interlocking block pavers for sidewalk/footpath [Local – 06 ] | 19d | 2026-07-19 A | 2026-08-20 A | CON-LEG101-LR-6250, CON-LEG101-LR-6450, CON-LEG101-PR-1570 | 100% |  |
|  | 5 | **Pavement Markings** |  | 2027-11-09 | 2027-12-01 |  |  |  |
| CON-LEG101-LR-6650 |  | Pavement Markings (White Paint/Yellow Paint) [Local – 06 ] | 10d | 2027-11-09 | 2027-11-20 | CON-LEG101-PR-2070, CON-LEG101-LR-6150, CON-LEG101-LR-6250, CON-LEG101-PR-1600 |  | -92.4d |
| CON-LEG101-LR-6750 |  | Handicap ramp [Local – 06 ] | 10d | 2027-11-21 | 2027-12-01 | CON-LEG101-LR-6650, CON-LEG101-PR-2600 |  | -92.4d |
|  | 6 | **Traffic Signs** |  | 2026-07-11 | 2027-12-09 |  |  |  |
| CON-LEG101-LR-6850 |  | Installation of Traffic Signs [Local – 06 ] | 15d | 2026-07-11 A | 2027-12-09 | CON-LEG101-PR-2060, CON-LEG101-LR-6550, CON-LEG101-PR-1630 | 80% | -92.4d |
| CON-LEG101-LR-6550 |  | Retroreflective Plastic Cones [Local – 06 ] | 4d | 2027-12-02 | 2027-12-06 | CON-LEG101-PR-2060, CON-LEG101-LR-6750, CON-LEG101-PR-1630 |  | -92.4d |
|  | 7 | **Local – 07** |  | 2026-07-05 | 2027-11-22 |  |  |  |
|  | 7 | **Concrete Curb** |  | 2026-07-05 | 2026-07-20 |  |  |  |
| CON-LEG101-LR-6260 |  | Installation of Precast Concrete Curb [Local – 07 ] | 8d | 2026-07-05 A | 2026-07-20 A | CON-LEG101-LR-5960, CON-LEG101-LR-2160, CON-LEG101-LR-10820, CON-LEG101-LR-7960, CON-LEG101-LR-8060, CON-LEG101-LR-8160, CON-LEG101-LR-2540, CON-LEG101-LR-9410, CON-LEG101-LR-6250, CON-LEG101-PR-1540 | 100% |  |
|  | 1 | **Asphalt Wearing Course** |  | 2026-10-01 | 2027-11-04 |  |  |  |
| CON-LEG101-LR-6060 |  | Tack coat (RC2) [Local – 07 ] | 6d | 2026-10-01 A | 2027-11-03 | CON-LEG101-LR-6260, CON-LEG101-LR-5960 | 90% | -77.1d |
| CON-LEG101-LR-6160 |  | Bituminous wearing course [Local – 07 ] | 6d | 2026-10-01 A | 2027-11-04 | CON-LEG101-LR-6060, CON-LEG101-PR-1510, CON-LEG101-EN-3470 | 90% | -77.1d |
|  | 3 | **Interlocking block roads/on-street parking** |  | 2026-07-23 | 2026-08-02 |  |  |  |
| CON-LEG101-LR-6460 |  | Interlocking block pavers for roads/on-street parking [Local – 07 ] | 15d | 2026-07-23 A | 2026-08-02 A | CON-LEG101-LR-6260, CON-LEG101-LR-6160, CON-LEG101-LR-5760, CON-LEG101-EN-3450 | 100% |  |
|  | 4 | **Interlocking block sidewalk/footpath** |  | 2026-07-23 | 2026-08-02 |  |  |  |
| CON-LEG101-LR-6360 |  | Interlocking block pavers for sidewalk/footpath [Local – 07 ] | 15d | 2026-07-23 A | 2026-08-02 A | CON-LEG101-LR-6260, CON-LEG101-LR-6460, CON-LEG101-PR-1570 | 100% |  |
|  | 5 | **Pavement Markings** |  | 2027-11-04 | 2027-11-14 |  |  |  |
| CON-LEG101-LR-6660 |  | Pavement Markings (White Paint/Yellow Paint) [Local – 07 ] | 4d | 2027-11-04 | 2027-11-09 | CON-LEG101-PR-2070, CON-LEG101-LR-6160, CON-LEG101-LR-6260, CON-LEG101-LR-6160 FF, CON-LEG101-PR-1600 |  | -77.1d |
| CON-LEG101-LR-6760 |  | Handicap ramp [Local – 07 ] | 4d | 2027-11-09 | 2027-11-14 | CON-LEG101-LR-6660, CON-LEG101-PR-2600 |  | -77.1d |
|  | 6 | **Traffic Signs** |  | 2026-07-12 | 2027-11-22 |  |  |  |
| CON-LEG101-LR-6860 |  | Installation of Traffic Signs [Local – 07 ] | 14d | 2026-07-12 A | 2027-11-22 | CON-LEG101-PR-2060, CON-LEG101-LR-6560, CON-LEG101-PR-1630 | 75% | -77.1d |
| CON-LEG101-LR-6560 |  | Retroreflective Plastic Cones [Local – 07 ] | 4d | 2027-11-14 | 2027-11-18 | CON-LEG101-PR-2060, CON-LEG101-LR-6760, CON-LEG101-PR-1630 |  | -77.1d |
|  | 8 | **Local – 08** |  | 2026-07-13 | 2027-11-22 |  |  |  |
|  | 7 | **Concrete Curb** |  | 2026-07-23 | 2027-11-06 |  |  |  |
| CON-LEG101-LR-6270 |  | Installation of Precast Concrete Curb [Local – 08 ] | 14d | 2026-07-23 A | 2027-11-06 | CON-LEG101-LR-5970, CON-LEG101-LR-2170, CON-LEG101-LR-10830, CON-LEG101-LR-7970, CON-LEG101-LR-8070, CON-LEG101-LR-8170, CON-LEG101-LR-2550, CON-LEG101-LR-9420, CON-LEG101-LR-8320, CON-LEG101-LR-6260, CON-LEG101-PR-1540 | 85% | -77.3d |
|  | 1 | **Asphalt Wearing Course** |  | 2026-10-24 | 2026-10-24 |  |  |  |
| CON-LEG101-LR-6070 |  | Tack coat (RC2) [Local – 08 ] | 2d | 2026-10-24 A | 2026-10-24 A | CON-LEG101-LR-6270, CON-LEG101-LR-5970 | 100% |  |
| CON-LEG101-LR-6170 |  | Bituminous wearing course [Local – 08 ] | 3d | 2026-10-24 A | 2026-10-24 A | CON-LEG101-LR-6070, CON-LEG101-PR-1510, CON-LEG101-EN-3470 | 100% |  |
|  | 3 | **Interlocking block roads/on-street parking** |  | 2026-09-12 | 2026-09-16 |  |  |  |
| CON-LEG101-LR-6470 |  | Interlocking block pavers for roads/on-street parking [Local – 08 ] | 13d | 2026-09-12 A | 2026-09-16 A | CON-LEG101-LR-6270, CON-LEG101-LR-6170, CON-LEG101-LR-5770, CON-LEG101-EN-3450 | 100% |  |
|  | 4 | **Interlocking block sidewalk/footpath** |  | 2026-09-13 | 2027-11-11 |  |  |  |
| CON-LEG101-LR-6370 |  | Interlocking block pavers for sidewalk/footpath [Local – 08 ] | 21d | 2026-09-13 A | 2027-11-11 | CON-LEG101-LR-6270, CON-LEG101-LR-6470, CON-LEG101-PR-1570 | 75% | -67.75d |
|  | 5 | **Pavement Markings** |  | 2027-11-06 | 2027-11-15 |  |  |  |
| CON-LEG101-LR-6670 |  | Pavement Markings (White Paint/Yellow Paint) [Local – 08 ] | 4d | 2027-11-06 | 2027-11-10 | CON-LEG101-LR-6170, CON-LEG101-LR-6270, CON-LEG101-PR-1600 |  | -77.3d |
| CON-LEG101-LR-6770 |  | Handicap ramp [Local – 08 ] | 4d | 2027-11-10 | 2027-11-15 | CON-LEG101-LR-6670, CON-LEG101-PR-2600 |  | -77.3d |
|  | 6 | **Traffic Signs** |  | 2026-07-13 | 2027-11-22 |  |  |  |
| CON-LEG101-LR-6870 |  | Installation of Traffic Signs [Local – 08 ] | 14d | 2026-07-13 A | 2027-11-22 | CON-LEG101-PR-2060, CON-LEG101-LR-6570, CON-LEG101-PR-1630 | 80% | -77.3d |
| CON-LEG101-LR-6570 |  | Retroreflective Plastic Cones [Local – 08 ] | 4d | 2027-11-15 | 2027-11-20 | CON-LEG101-LR-6770, CON-LEG101-PR-1630 |  | -77.3d |
|  | 5 | **Fence and Gate** |  | 2025-12-10 | 2027-12-12 |  |  |  |
|  | 1 | **Fence and Gate Segment -01 (From 0+000 to 0+671)** |  | 2025-12-10 | 2027-03-13 |  |  |  |
|  | 1 | **Fence** |  | 2025-12-10 | 2027-03-13 |  |  |  |
| CON-LEG101-FG-1000 |  | Excavation for Fences [Fence and Gate Segment -01] | 10d | 2025-12-10 A | 2026-11-15 | CON-LEG101-SD-1000, CON-LEG101-SD-1010, CON-LEG101-SD-1030, CON-LEG101-EN-3410, CON-LEG101-EN-3420, CON-LEG101-EN-3430, CON-LEG101-EN-3440 | 85% | 9.28d |
| CON-LEG101-FG-1100 |  | Lean concrete for Foundation [Fence and Gate Segment -01] | 4d | 2025-12-21 A | 2026-11-19 | CON-LEG101-FG-1000, CON-LEG101-EN-3450, CON-LEG101-EN-3460, CON-LEG101-PR-1430 | 20% | 9.28d |
| CON-LEG101-FG-1150 |  | Reinforced concrete Structure [Fence and Gate Segment -01] | 20d | 2025-12-23 A | 2026-12-10 | CON-LEG101-PR-1410, CON-LEG101-FG-1100 | 20% | 9.28d |
| CON-LEG101-FG-1200 |  | Spraying of bituminous paint waterproofing for R.C foundation [Fence and Gate Segment -01] | 10d | 2026-12-10 | 2026-12-22 | CON-LEG101-FG-1150, CON-LEG101-PR-1460 |  | 9.28d |
| CON-LEG101-FG-1260 |  | Embankments to the Fences [Fence and Gate Segment -01] | 8d | 2026-12-22 | 2026-12-31 | CON-LEG101-FG-1150, CON-LEG101-FG-1200, CON-LEG101-EN-3410, CON-LEG101-EN-3420, CON-LEG101-EN-3430, CON-LEG101-EN-3440 |  | 9.28d |
| CON-LEG101-FG-1050 |  | Concrete Works for Ground Beam for Fences [Fence and Gate Segment -01] | 20d | 2026-12-31 | 2027-01-24 | CON-LEG101-FG-1260, CON-LEG101-EN-3410, CON-LEG101-EN-3420, CON-LEG101-EN-3430, CON-LEG101-EN-3440 |  | 9.28d |
| CON-LEG101-FG-1420 |  | Plster Works for Fences [Fence and Gate Segment -01] | 12d | 2027-01-24 | 2027-02-07 | CON-LEG101-FG-1050, CON-LEG101-EN-3410, CON-LEG101-EN-3420, CON-LEG101-EN-3430, CON-LEG101-EN-3440 |  | 9.28d |
| CON-LEG101-FG-1280 |  | Installation of Metal Fence [Fence and Gate Segment -01] | 14d | 2027-02-07 | 2027-03-01 | CON-LEG101-PR-2080, CON-LEG101-FG-1420, CON-LEG101-FG-1200, CON-LEG101-PR-2020 |  | 9.28d |
| CON-LEG101-FG-1340 |  | Paint On Cement Plaster [Fence and Gate Segment -01] | 10d | 2027-03-01 | 2027-03-13 | CON-LEG101-PR-2940, CON-LEG101-FG-1280 FF, CON-LEG101-FG-1280, CON-LEG101-PR-2630 |  | 9.28d |
|  | 2 | **Fence and Gate Segment -02 (From 0+671 to 1+342)** |  | 2026-03-25 | 2027-05-08 |  |  |  |
|  | 1 | **Fence** |  | 2026-03-25 | 2027-05-08 |  |  |  |
| CON-LEG101-FG-1010 |  | Excavation for Fences [Fence and Gate Segment -02] | 10d | 2026-03-25 A | 2027-03-16 | CON-LEG101-SD-1000, CON-LEG101-SD-1010, CON-LEG101-SD-1020, CON-LEG101-SD-1030, CON-LEG101-FG-1340, CON-LEG101-EN-3410, CON-LEG101-EN-3420, CON-LEG101-EN-3430, CON-LEG101-EN-3440 | 85% | 9.28d |
| CON-LEG101-FG-1110 |  | Lean concrete for Foundation [Fence and Gate Segment -02] | 4d | 2026-04-02 A | 2027-03-17 | CON-LEG101-FG-1010, CON-LEG101-EN-3450, CON-LEG101-EN-3460, CON-LEG101-PR-1430 | 85% | 9.28d |
| CON-LEG101-FG-1160 |  | Reinforced concrete Structure [Fence and Gate Segment -02] | 20d | 2026-04-04 A | 2027-03-23 | CON-LEG101-PR-1410, CON-LEG101-FG-1110 | 85% | 9.28d |
| CON-LEG101-FG-1210 |  | Spraying of bituminous paint waterproofing for R.C foundation [Fence and Gate Segment -02] | 10d | 2026-05-02 A | 2027-03-25 | CON-LEG101-FG-1160, CON-LEG101-PR-1460 | 85% | 9.28d |
| CON-LEG101-FG-1330 |  | Embankments to the Fences [Fence and Gate Segment -02] | 8d | 2026-05-09 A | 2027-03-28 | CON-LEG101-FG-1210, CON-LEG101-EN-3410, CON-LEG101-EN-3420, CON-LEG101-EN-3430, CON-LEG101-EN-3440 | 85% | 9.28d |

| ID | WBS | Task | Duration | Start | Finish | Predecessors | Complete | Total float |
| --- | --- | --- | --- | --- | --- | --- | --- | --- |
| CON-LEG101-FG-1060 |  | Concrete Works for Ground Beam for Fences [Fence and Gate Segment -02] | 20d | 2026-05-12 A | 2027-04-03 | CON-LEG101-FG-1330, CON-LEG101-EN-3410, CON-LEG101-EN-3420, CON-LEG101-EN-3430, CON-LEG101-EN-3440 | 85% | 9.28d |
| CON-LEG101-FG-1290 |  | Installation of Metal Fence [Fence and Gate Segment -02] | 14d | 2026-09-02 A | 2027-04-27 | CON-LEG101-PR-2080, CON-LEG101-FG-1430, CON-LEG101-PR-2020 | 40% | 9.28d |
| CON-LEG101-FG-1350 |  | Paint On Cement Plaster [Fence and Gate Segment -02] | 12d | 2026-11-07 A | 2027-05-08 | CON-LEG101-PR-2940, CON-LEG101-FG-1290, CON-LEG101-PR-2630 | 20% | 9.28d |
| CON-LEG101-FG-1430 |  | Plster Works for Fences [Fence and Gate Segment -02] | 12d | 2027-04-03 | 2027-04-17 | CON-LEG101-FG-1060, CON-LEG101-EN-3410, CON-LEG101-EN-3420, CON-LEG101-EN-3430, CON-LEG101-EN-3440 |  | 9.28d |
|  | 3 | **Fence and Gate Segment -03 (From 1+342 to 2+014)** |  | 2026-01-25 | 2027-07-06 |  |  |  |
|  | 1 | **Fence** |  | 2026-01-25 | 2027-05-27 |  |  |  |
| CON-LEG101-FG-1020 |  | Excavation for Fences [Fence and Gate Segment -03] | 10d | 2026-01-25 A | 2026-03-17 A | CON-LEG101-SD-1000, CON-LEG101-SD-1010, CON-LEG101-SD-1020, CON-LEG101-SD-1030, CON-LEG101-FG-1350, CON-LEG101-EN-3410, CON-LEG101-EN-3420, CON-LEG101-EN-3430, CON-LEG101-EN-3440 | 100% |  |
| CON-LEG101-FG-1120 |  | Lean concrete for Foundation [Fence and Gate Segment -03] | 4d | 2026-01-31 A | 2026-04-20 A | CON-LEG101-FG-1020, CON-LEG101-EN-3450, CON-LEG101-EN-3460, CON-LEG101-PR-1430 | 100% |  |
| CON-LEG101-FG-1170 |  | Reinforced concrete Structure [Fence and Gate Segment -03] | 20d | 2026-02-11 A | 2026-07-27 A | CON-LEG101-PR-1410, CON-LEG101-FG-1120 | 100% |  |
| CON-LEG101-FG-1220 |  | Spraying of bituminous paint waterproofing for R.C foundation [Fence and Gate Segment -03] | 10d | 2026-02-18 A | 2026-08-04 A | CON-LEG101-FG-1170, CON-LEG101-PR-1460 | 100% |  |
| CON-LEG101-FG-1390 |  | Embankments to the Fences [Fence and Gate Segment -03] | 8d | 2026-04-01 A | 2026-08-09 A | CON-LEG101-FG-1220, CON-LEG101-EN-3410, CON-LEG101-EN-3420, CON-LEG101-EN-3430, CON-LEG101-EN-3440 | 100% |  |
| CON-LEG101-FG-1070 |  | Concrete Works for Ground Beam for Fences [Fence and Gate Segment -03] | 20d | 2026-04-11 A | 2026-08-20 A | CON-LEG101-FG-1390, CON-LEG101-EN-3410, CON-LEG101-EN-3420, CON-LEG101-EN-3430, CON-LEG101-EN-3440 | 100% |  |
| CON-LEG101-FG-1300 |  | Installation of Metal Fence [Fence and Gate Segment -03] | 14d | 2026-05-14 A | 2027-05-20 | CON-LEG101-PR-2080, CON-LEG101-FG-1440, CON-LEG101-PR-2020 | 97% | 9.28d |
| CON-LEG101-FG-1440 |  | Plster Works for Fences [Fence and Gate Segment -03] | 12d | 2026-08-01 A | 2027-05-19 | CON-LEG101-FG-1070, CON-LEG101-EN-3410, CON-LEG101-EN-3420, CON-LEG101-EN-3430, CON-LEG101-EN-3440 | 50% | 9.28d |
| CON-LEG101-FG-1360 |  | Paint On Cement Plaster [Fence and Gate Segment -03] | 12d | 2026-09-19 A | 2027-05-27 | CON-LEG101-PR-2940, CON-LEG101-FG-1300, CON-LEG101-PR-2630 | 50% | 43.28d |
|  | 2 | **Gate** |  | 2027-05-20 | 2027-07-06 |  |  |  |
| CON-LEG101-FG-1250 |  | Installation of Main Entrance Motorized Gate [Fence and Gate Segment -03] | 20d | 2027-05-20 | 2027-06-13 | CON-LEG101-PR-2050, CON-LEG101-PR-2090, CON-LEG101-FG-1300 |  | 9.28d |
| CON-LEG101-FG-1270 |  | Installation of Pedestrain Gate [Fence and Gate Segment -03] | 20d | 2027-06-13 | 2027-07-06 | CON-LEG101-PR-2050, CON-LEG101-PR-2090, CON-LEG101-FG-1250 |  | 9.28d |
|  | 4 | **Fence and Gate Segment -04 (From 2+014 to 2+685)** |  | 2025-12-25 | 2027-09-06 |  |  |  |
|  | 1 | **Fence** |  | 2025-12-25 | 2027-09-06 |  |  |  |
| CON-LEG101-FG-1030 |  | Excavation for Fences [Fence and Gate Segment -04] | 10d | 2025-12-25 A | 2026-01-27 A | CON-LEG101-SD-1000, CON-LEG101-SD-1010, CON-LEG101-SD-1020, CON-LEG101-SD-1030, CON-LEG101-FG-1360, CON-LEG101-EN-3410, CON-LEG101-EN-3420, CON-LEG101-EN-3430, CON-LEG101-EN-3440 | 100% |  |
| CON-LEG101-FG-1130 |  | Lean concrete for Foundation [Fence and Gate Segment -04] | 4d | 2026-01-06 A | 2026-02-18 A | CON-LEG101-FG-1030, CON-LEG101-EN-3450, CON-LEG101-EN-3460, CON-LEG101-PR-1430 | 100% |  |
| CON-LEG101-FG-1180 |  | Reinforced concrete Structure [Fence and Gate Segment -04] | 20d | 2026-01-07 A | 2026-04-15 A | CON-LEG101-PR-1410, CON-LEG101-FG-1130 | 100% |  |
| CON-LEG101-FG-1230 |  | Spraying of bituminous paint waterproofing for R.C foundation [Fence and Gate Segment -04] | 10d | 2026-01-13 A | 2026-04-16 A | CON-LEG101-FG-1180, CON-LEG101-PR-1460, CON-LEG101-FG-1270 | 100% |  |
| CON-LEG101-FG-1080 |  | Concrete Works for Ground Beam for Fences [Fence and Gate Segment -04] | 20d | 2026-01-17 A | 2026-06-30 A | CON-LEG101-FG-1400, CON-LEG101-EN-3410, CON-LEG101-EN-3420, CON-LEG101-EN-3430, CON-LEG101-EN-3440, CON-LEG101-MS-1050 | 100% |  |
| CON-LEG101-FG-1400 |  | Embankments to the Fences [Fence and Gate Segment -04] | 8d | 2026-02-10 A | 2026-04-22 A | CON-LEG101-FG-1230, CON-LEG101-EN-3410, CON-LEG101-EN-3420, CON-LEG101-EN-3430, CON-LEG101-EN-3440 | 100% |  |
| CON-LEG101-FG-1310 |  | Installation of Metal Fence [Fence and Gate Segment -04] | 7d | 2026-04-22 A | 2026-08-19 A | CON-LEG101-PR-2080, CON-LEG101-FG-1450, CON-LEG101-PR-2020, CON-LEG101-MS-1020 | 100% |  |
| CON-LEG101-FG-1370 |  | Paint On Cement Plaster [Fence and Gate Segment -04] | 12d | 2026-05-11 A | 2027-09-06 | CON-LEG101-PR-2940, CON-LEG101-FG-1310, CON-LEG101-PR-2630 | 95% | -43d |
| CON-LEG101-FG-1450 |  | Plster Works for Fences [Fence and Gate Segment -04] | 10d | 2026-09-01 A | 2027-07-11 | CON-LEG101-FG-1080, CON-LEG101-EN-3410, CON-LEG101-EN-3420, CON-LEG101-EN-3430, CON-LEG101-EN-3440 | 95% | 5.18d |
|  | 5 | **Fence and Gate Segment -05 (From 2+685 to 3+356)** |  | 2027-09-06 | 2027-12-12 |  |  |  |
|  | 1 | **Fence** |  | 2027-09-06 | 2027-12-12 |  |  |  |
| CON-LEG101-FG-1040 |  | Excavation for Fences [Fence and Gate Segment -05] | 10d | 2027-09-06 | 2027-09-18 | CON-LEG101-SD-1000, CON-LEG101-SD-1010, CON-LEG101-SD-1020, CON-LEG101-SD-1030, CON-LEG101-FG-1370, CON-LEG101-EN-3410, CON-LEG101-EN-3420, CON-LEG101-EN-3430, CON-LEG101-EN-3440, CON-LEG101-MS-1020 |  | -43d |
| CON-LEG101-FG-1140 |  | Lean concrete for Foundation [Fence and Gate Segment -05] | 4d | 2027-09-18 | 2027-09-22 | CON-LEG101-FG-1040, CON-LEG101-EN-3450, CON-LEG101-EN-3460, CON-LEG101-PR-1430 |  | -43d |
| CON-LEG101-FG-1190 |  | Reinforced concrete Structure [Fence and Gate Segment -05] | 20d | 2027-09-22 | 2027-10-17 | CON-LEG101-PR-1410, CON-LEG101-FG-1140 |  | -43d |
| CON-LEG101-FG-1240 |  | Spraying of bituminous paint waterproofing for R.C foundation [Fence and Gate Segment -05] | 10d | 2027-10-17 | 2027-10-28 | CON-LEG101-FG-1190, CON-LEG101-PR-1460 |  | -43d |
| CON-LEG101-FG-1410 |  | Embankments to the Fences [Fence and Gate Segment -05] | 4d | 2027-10-28 | 2027-11-02 | CON-LEG101-FG-1240, CON-LEG101-EN-3410, CON-LEG101-EN-3420, CON-LEG101-EN-3430, CON-LEG101-EN-3440 |  | -43d |
| CON-LEG101-FG-1090 |  | Concrete Works for Ground Beam for Fences [Fence and Gate Segment -05] | 15d | 2027-11-02 | 2027-11-20 | CON-LEG101-FG-1410, CON-LEG101-EN-3410, CON-LEG101-EN-3420, CON-LEG101-EN-3430, CON-LEG101-EN-3440 |  | -43d |
| CON-LEG101-FG-1460 |  | Plster Works for Fences [Fence and Gate Segment -05] | 6d | 2027-11-20 | 2027-11-27 | CON-LEG101-FG-1090, CON-LEG101-EN-3410, CON-LEG101-EN-3420, CON-LEG101-EN-3430, CON-LEG101-EN-3440 |  | -43d |
| CON-LEG101-FG-1320 |  | Installation of Metal Fence [Fence and Gate Segment -05] | 7d | 2027-11-27 | 2027-12-05 | CON-LEG101-FG-1460, CON-LEG101-FG-1240, CON-LEG101-PR-2020 |  | -43d |
| CON-LEG101-FG-1380 |  | Paint On Cement Plaster [Fence and Gate Segment -05] | 6d | 2027-12-05 | 2027-12-12 | CON-LEG101-PR-2940, CON-LEG101-FG-1320, CON-LEG101-PR-2630 |  | -43d |
|  | 2 | **Roundabout & Landscape** |  | 2026-10-17 | 2028-04-08 |  |  |  |
|  | 10 | **Local – 01** |  | 2026-10-17 | 2027-12-27 |  |  |  |
|  | 1 | **LOCAL - 01 Segment-01 (From 0+000 to 1+066)** |  | 2026-10-17 | 2027-11-27 |  |  |  |
|  | 3 | **Irrigation Works** |  | 2026-10-17 | 2027-10-11 |  |  |  |
|  | 1 | **Secondary Irrigation** |  | 2026-10-17 | 2027-10-11 |  |  |  |
|  | 1 | **Pipe Work** |  | 2026-10-17 | 2027-08-23 |  |  |  |
| CON-LEG101-LR-4940 |  | Sand bedding for Secondary Irrigation [Local – 01 Segment-01] | 5d | 2026-10-17 A | 2026-11-05 A | CON-LEG101-LR-4870 | 100% |  |
| CON-LEG101-LR-4870 |  | Excavation for Secondary Irrigation [Local – 01 Segment-01] | 8d | 2026-10-18 A | 2026-11-04 A | CON-LEG101-LR-6180, CON-LEG101-LR-7420 SS, CON-LEG101-EN-3340, CON-LEG101-EN-3440 | 100% |  |
| CON-LEG101-LR-5010 |  | Installation of Pipe for Secondary Irrigation [Local – 01 Segment-01] | 10d | 2026-10-19 A | 2026-11-05 A | CON-LEG101-PR-3980, CON-LEG101-LR-4940, CON-LEG101-PR-3940 | 100% |  |
| CON-LEG101-LR-5080 |  | Sand Surround for Secondary Irrigation [Local – 01 Segment-01] | 5d | 2026-10-20 A | 2026-11-07 A | CON-LEG101-LR-5010 | 100% |  |
| CON-LEG101-LR-5150 |  | Installation of Micron Marker Magnetic Tape [Local – 01 Segment-01] | 10d | 2026-10-21 A | 2026-11-08 A | CON-LEG101-LR-5080 | 100% |  |
| CON-LEG101-LR-5210 |  | Backfilling to Subgrade Elevation [Local – 01 Segment-01] | 5d | 2026-10-22 A | 2026-11-09 A | CON-LEG101-LR-5150, CON-LEG101-EN-3440 | 100% |  |
| CON-LEG101-LR-5410 |  | Installation of tubing for risers connections from laterals [Local – 01 Segment-01] | 17d | 2026-10-24 A | 2027-08-23 | CON-LEG101-LR-5210, CON-LEG101-PR-2770 | 50% | -59.15d |
|  | 2 | **Valves and Controller** |  | 2027-08-23 | 2027-10-11 |  |  |  |
| CON-LEG101-LR-5270 |  | Installation of Electrical Solenoid Valve [Local – 01 Segment-01] | 5d | 2027-08-23 | 2027-08-29 | CON-LEG101-LR-5010, CON-LEG101-PR-3020, CON-LEG101-LR-5410 |  | -59.15d |
| CON-LEG101-LR-5310 |  | Installation of quick coupler valve [Local – 01 Segment-01] | 5d | 2027-08-29 | 2027-09-04 | CON-LEG101-LR-5270, CON-LEG101-PR-3030 |  | -59.15d |
| CON-LEG101-LR-5350 |  | Installation of a Flush valve [Local – 01 Segment-01] | 5d | 2027-09-04 | 2027-09-09 | CON-LEG101-PR-2760, CON-LEG101-LR-5310, CON-LEG101-PR-3110 |  | -59.65d |
| CON-LEG101-LR-5470 |  | Installation of Advanced Irrigation controller [Local – 01 Segment-01] | 7d | 2027-09-09 | 2027-09-18 | CON-LEG101-PR-2780, CON-LEG101-LR-5350, CON-LEG101-PR-3040 |  | -59.65d |
| CON-LEG101-LR-5480 |  | Install single station decoder for valve connection [Local – 01 Segment-01] | 7d | 2027-09-18 | 2027-09-27 | CON-LEG101-LR-5470, CON-LEG101-PR-3150 |  | -59.65d |
| CON-LEG101-LR-5520 |  | Installation of Decoder cables 12 AWG between valves and controllers [Local – 01 Segment-01] | 12d | 2027-09-27 | 2027-10-11 | CON-LEG101-LR-5480, CON-LEG101-PR-3050 |  | -59.65d |
|  | 14 | **Curbs and edging** |  | 2027-10-11 | 2027-10-13 |  |  |  |
| CON-LEG101-LR-4790 |  | Installation of Curbs and edging [Local – 01 Segment-01] | 2d | 2027-10-11 | 2027-10-13 | CON-LEG101-LR-5520, CON-LEG101-PR-3070, CON-LEG101-EN-3400 |  | -59.65d |
|  | 13 | **Landscape** |  | 2027-10-13 | 2027-11-27 |  |  |  |
| CON-LEG101-LR-4580 |  | Site preparation for Planting Area [Local – 01 Segment-01] | 9d | 2027-10-13 | 2027-10-24 | CON-LEG101-LR-4790, CON-LEG101-EN-3370, CON-LEG101-EN-3440 |  | -59.65d |
| CON-LEG101-LR-4650 |  | Placing Agricutural Soil [Local – 01 Segment-01] | 9d | 2027-10-24 | 2027-11-03 | CON-LEG101-LR-4580, CON-LEG101-EN-3380 |  | -59.65d |
| CON-LEG101-LR-4720 |  | Planting Shrubs And Ground Cover [Local – 01 Segment-01] | 20d | 2027-11-03 | 2027-11-27 | CON-LEG101-LR-4650, CON-LEG101-EN-3390, CON-LEG101-PR-3060 |  | -33.65d |
|  | 2 | **LOCAL - 01 Segment-02 (From 1+066 to 2+133)** |  | 2026-10-17 | 2027-12-27 |  |  |  |
|  | 2 | **Irrigation Works** |  | 2026-10-17 | 2027-11-23 |  |  |  |
|  | 1 | **Secondary Irrigation** |  | 2026-10-17 | 2027-11-23 |  |  |  |
|  | 1 | **Pipe Work** |  | 2026-10-17 | 2027-09-15 |  |  |  |

| ID | WBS | Task | Duration | Start | Finish | Predecessors | Complete | Total float |
| --- | --- | --- | --- | --- | --- | --- | --- | --- |
| CON-LEG101-LR-4880 |  | Excavation for Secondary Irrigation [Local – 01 Segment-02] | 5d | 2026-10-17 A | 2026-11-04 A | CON-LEG101-LR-6190, CON-LEG101-LR-8090, CON-LEG101-EN-3340, CON-LEG101-EN-3440, CON-LEG101-LR-5410 | 100% |  |
| CON-LEG101-LR-4950 |  | Sand bedding for Secondary Irrigation [Local – 01 Segment-02] | 5d | 2026-10-18 A | 2026-11-04 A | CON-LEG101-LR-4880, CON-LEG101-MS-1020 | 100% |  |
| CON-LEG101-LR-5020 |  | Installation of Pipe for Secondary Irrigation [Local – 01 Segment-02] | 5d | 2026-10-19 A | 2026-11-05 A | CON-LEG101-PR-3980, CON-LEG101-LR-4950, CON-LEG101-PR-3940 | 100% |  |
| CON-LEG101-LR-5090 |  | Sand Surround for Secondary Irrigation [Local – 01 Segment-02] | 5d | 2026-10-20 A | 2026-11-07 A | CON-LEG101-LR-5020 | 100% |  |
| CON-LEG101-LR-5160 |  | Installation of Micron Marker Magnetic Tape [Local – 01 Segment-02] | 5d | 2026-10-21 A | 2026-11-08 A | CON-LEG101-LR-5090 | 100% |  |
| CON-LEG101-LR-5220 |  | Backfilling to Subgrade Elevation [Local – 01 Segment-02] | 5d | 2026-10-22 A | 2026-11-09 A | CON-LEG101-LR-5160, CON-LEG101-EN-3440 | 100% |  |
| CON-LEG101-LR-5420 |  | Installation of tubing for risers connections from laterals [Local – 01 Segment-02] | 17d | 2026-10-24 A | 2027-09-15 | CON-LEG101-LR-5220, CON-LEG101-PR-2770 | 50% | -28.5d |
|  | 2 | **Valves and Controller** |  | 2027-11-03 | 2027-11-23 |  |  |  |
| CON-LEG101-LR-5360 |  | Installation of a Flush valve [Local – 01 Segment-02] | 5d | 2027-11-03 | 2027-11-09 | CON-LEG101-PR-2760, CON-LEG101-LR-5020, CON-LEG101-PR-3110, CON-LEG101-LR-4650 |  | -59.65d |
| CON-LEG101-LR-5530 |  | Installation of Decoder cables 12 AWG between valves and controllers [Local – 01 Segment-02] | 12d | 2027-11-09 | 2027-11-23 | CON-LEG101-PR-2790, CON-LEG101-LR-5360, CON-LEG101-PR-3050 |  | -59.65d |
|  | 14 | **Curbs and edging** |  | 2027-11-23 | 2027-11-25 |  |  |  |
| CON-LEG101-LR-4800 |  | Installation of Curbs and edging [Local – 01 Segment-02] | 2d | 2027-11-23 | 2027-11-25 | CON-LEG101-LR-5530, CON-LEG101-PR-3070, CON-LEG101-EN-3400 |  | -59.65d |
|  | 13 | **Landscape** |  | 2027-11-25 | 2027-12-27 |  |  |  |
| CON-LEG101-LR-4590 |  | Site preparation for Planting Area [Local – 01 Segment-02] | 9d | 2027-11-25 | 2027-12-06 | CON-LEG101-LR-4800, CON-LEG101-EN-3370, CON-LEG101-EN-3440 |  | -59.65d |
| CON-LEG101-LR-4660 |  | Placing Agricutural Soil [Local – 01 Segment-02] | 9d | 2027-12-06 | 2027-12-16 | CON-LEG101-LR-4590, CON-LEG101-EN-3380 |  | -59.65d |
| CON-LEG101-LR-4730 |  | Planting Shrubs And Ground Cover [Local – 01 Segment-02] | 9d | 2027-12-16 | 2027-12-27 | CON-LEG101-LR-4660, CON-LEG101-EN-3390, CON-LEG101-PR-3060 |  | -59.65d |
|  | 3 | **LOCAL - 01 Segment-03 (From 2+133 to 3+200)** |  | 2026-10-24 | 2027-11-13 |  |  |  |
|  | 2 | **Irrigation Works** |  | 2026-10-24 | 2027-10-10 |  |  |  |
|  | 1 | **Secondary Irrigation** |  | 2026-10-24 | 2027-10-10 |  |  |  |
|  | 1 | **Pipe Work** |  | 2026-10-24 | 2027-10-05 |  |  |  |
| CON-LEG101-LR-4890 |  | Excavation for Secondary Irrigation [Local – 01 Segment-03] | 5d | 2026-10-24 A | 2027-09-16 | CON-LEG101-LR-6200, CON-LEG101-LR-8100, CON-LEG101-EN-3340, CON-LEG101-EN-3440, CON-LEG101-LR-5420 | 80% | -28.5d |
| CON-LEG101-LR-4960 |  | Sand bedding for Secondary Irrigation [Local – 01 Segment-03] | 5d | 2026-10-25 A | 2027-09-18 | CON-LEG101-LR-4890 | 80% | -21.5d |
| CON-LEG101-LR-5030 |  | Installation of Pipe for Secondary Irrigation [Local – 01 Segment-03] | 5d | 2026-10-26 A | 2027-09-19 | CON-LEG101-PR-3980, CON-LEG101-LR-4960, CON-LEG101-PR-3940 | 80% | -21.5d |
| CON-LEG101-LR-5100 |  | Sand Surround for Secondary Irrigation [Local – 01 Segment-03] | 8d | 2026-10-27 A | 2027-09-21 | CON-LEG101-LR-5030 | 80% | 11.2d |
| CON-LEG101-LR-5170 |  | Installation of Micron Marker Magnetic Tape [Local – 01 Segment-03] | 8d | 2026-10-28 A | 2027-09-22 | CON-LEG101-LR-5100 | 80% | 11.2d |
| CON-LEG101-LR-5230 |  | Backfilling to Subgrade Elevation [Local – 01 Segment-03] | 8d | 2026-10-29 A | 2027-09-26 | CON-LEG101-LR-5170, CON-LEG101-EN-3440 | 80% | 11.2d |
| CON-LEG101-LR-5430 |  | Installation of tubing for risers connections from laterals [Local – 01 Segment-03] | 17d | 2026-10-31 A | 2027-10-05 | CON-LEG101-LR-5230, CON-LEG101-PR-2770 | 50% | 11.2d |
|  | 2 | **Valves and Controller** |  | 2027-09-19 | 2027-10-10 |  |  |  |
| CON-LEG101-LR-5370 |  | Installation of a Flush valve [Local – 01 Segment-03] | 5d | 2027-09-19 | 2027-09-26 | CON-LEG101-PR-2760, CON-LEG101-LR-5030, CON-LEG101-PR-3110 |  | -21.5d |
| CON-LEG101-LR-5540 |  | Installation of Decoder cables 12 AWG between valves and controllers [Local – 01 Segment-03] | 12d | 2027-09-26 | 2027-10-10 | CON-LEG101-PR-2790, CON-LEG101-LR-5370, CON-LEG101-PR-3050 |  | -21.5d |
|  | 14 | **Curbs and edging** |  | 2027-10-10 | 2027-10-12 |  |  |  |
| CON-LEG101-LR-4810 |  | Installation of Curbs and edging [Local – 01 Segment-03] | 2d | 2027-10-10 | 2027-10-12 | CON-LEG101-LR-5540, CON-LEG101-PR-3070, CON-LEG101-EN-3400 |  | -21.5d |
|  | 13 | **Landscape** |  | 2027-10-12 | 2027-11-13 |  |  |  |
| CON-LEG101-LR-4600 |  | Site preparation for Planting Area [Local – 01 Segment-03] | 9d | 2027-10-12 | 2027-10-23 | CON-LEG101-LR-4810, CON-LEG101-EN-3370, CON-LEG101-EN-3440 |  | -21.5d |
| CON-LEG101-LR-4670 |  | Placing Agricutural Soil [Local – 01 Segment-03] | 9d | 2027-10-23 | 2027-11-02 | CON-LEG101-LR-4600, CON-LEG101-EN-3380 |  | -21.5d |
| CON-LEG101-LR-4740 |  | Planting Shrubs And Ground Cover [Local – 01 Segment-03] | 9d | 2027-11-02 | 2027-11-13 | CON-LEG101-LR-4670, CON-LEG101-EN-3390, CON-LEG101-PR-3060 |  | -21.5d |
|  | 3 | **Local – 02** |  | 2026-10-24 | 2027-11-18 |  |  |  |
|  | 3 | **Irrigation Works** |  | 2026-10-24 | 2027-10-25 |  |  |  |
|  | 1 | **Secondary Irrigation** |  | 2026-10-24 | 2027-10-25 |  |  |  |
|  | 1 | **Pipe Work** |  | 2026-10-24 | 2027-10-03 |  |  |  |
| CON-LEG101-LR-4900 |  | Excavation for Secondary Irrigation [Local – 02 ] | 4d | 2026-10-24 A | 2027-09-18 | CON-LEG101-LR-6210, CON-LEG101-LR-7430, CON-LEG101-EN-3340, CON-LEG101-EN-3440, CON-LEG101-LR-4890 | 85% | -28.5d |
| CON-LEG101-LR-4970 |  | Sand bedding for Secondary Irrigation [Local – 02 ] | 4d | 2026-10-25 A | 2027-09-18 | CON-LEG101-LR-4900 | 85% | -26.3d |
| CON-LEG101-LR-5040 |  | Installation of Pipe for Secondary Irrigation [Local – 02 ] | 4d | 2026-10-26 A | 2027-09-19 | CON-LEG101-PR-3980, CON-LEG101-LR-4970, CON-LEG101-PR-3940 | 85% | -26.3d |
| CON-LEG101-LR-5110 |  | Sand Surround for Secondary Irrigation [Local – 02 ] | 8d | 2026-10-27 A | 2027-09-20 | CON-LEG101-LR-5040 | 85% | 13.3d |
| CON-LEG101-LR-5180 |  | Installation of Micron Marker Magnetic Tape [Local – 02 ] | 8d | 2026-10-28 A | 2027-09-21 | CON-LEG101-LR-5110 | 85% | 13.3d |
| CON-LEG101-LR-5240 |  | Backfilling to Subgrade Elevation [Local – 02 ] | 10d | 2026-10-29 A | 2027-09-25 | CON-LEG101-LR-5180, CON-LEG101-EN-3440 | 85% | 13.3d |
| CON-LEG101-LR-5440 |  | Installation of tubing for risers connections from laterals [Local – 02 ] | 15d | 2026-10-31 A | 2027-10-03 | CON-LEG101-LR-5240, CON-LEG101-PR-2770 | 50% | 13.3d |
|  | 2 | **Valves and Controller** |  | 2027-09-19 | 2027-10-25 |  |  |  |
| CON-LEG101-LR-5280 |  | Installation of Electrical Solenoid Valve [Local – 02 ] | 5d | 2027-09-19 | 2027-09-26 | CON-LEG101-LR-5040, CON-LEG101-PR-3020 |  | -26.3d |
| CON-LEG101-LR-5320 |  | Installation of quick coupler valve [Local – 02 ] | 5d | 2027-09-26 | 2027-10-02 | CON-LEG101-LR-5280, CON-LEG101-PR-3030 |  | -26.3d |
| CON-LEG101-LR-5380 |  | Installation of a Flush valve [Local – 02 ] | 4d | 2027-10-02 | 2027-10-06 | CON-LEG101-PR-2760, CON-LEG101-LR-5320, CON-LEG101-PR-3110 |  | -26.3d |
| CON-LEG101-LR-5490 |  | Install single station decoder for valve connection [Local – 02 ] | 7d | 2027-10-06 | 2027-10-14 | CON-LEG101-PR-2830, CON-LEG101-LR-5380, CON-LEG101-PR-3150 |  | -26.3d |
| CON-LEG101-LR-5550 |  | Installation of Decoder cables 12 AWG between valves and controllers [Local – 02 ] | 9d | 2027-10-14 | 2027-10-25 | CON-LEG101-PR-2790, CON-LEG101-LR-5490, CON-LEG101-PR-3050 |  | -26.3d |
|  | 14 | **Curbs and edging** |  | 2027-10-25 | 2027-10-28 |  |  |  |
| CON-LEG101-LR-4830 |  | Installation of Curbs and edging [Local – 02 ] | 3d | 2027-10-25 | 2027-10-28 | CON-LEG101-LR-5550, CON-LEG101-PR-3070, CON-LEG101-EN-3400 |  | -26.3d |
|  | 13 | **Landscape** |  | 2027-10-28 | 2027-11-18 |  |  |  |
| CON-LEG101-LR-4610 |  | Site preparation for Planting Area [Local – 02 ] | 6d | 2027-10-28 | 2027-11-04 | CON-LEG101-LR-4830, CON-LEG101-EN-3370, CON-LEG101-EN-3440 |  | -26.3d |
| CON-LEG101-LR-4680 |  | Placing Agricutural Soil [Local – 02 ] | 6d | 2027-11-04 | 2027-11-11 | CON-LEG101-LR-4610, CON-LEG101-EN-3380 |  | -26.3d |
| CON-LEG101-LR-4750 |  | Planting Shrubs And Ground Cover [Local – 02 ] | 6d | 2027-11-11 | 2027-11-18 | CON-LEG101-LR-4680, CON-LEG101-EN-3390, CON-LEG101-PR-3060 |  | -26.3d |
|  | 5 | **Local – 04** |  | 2027-11-03 | 2028-01-05 |  |  |  |
|  | 2 | **Irrigation Works** |  | 2027-11-03 | 2027-12-22 |  |  |  |
|  | 1 | **Secondary Irrigation** |  | 2027-11-03 | 2027-12-22 |  |  |  |
|  | 1 | **Pipe Work** |  | 2027-11-03 | 2027-12-06 |  |  |  |
| CON-LEG101-LR-4910 |  | Excavation for Secondary Irrigation [Local – 04 ] | 3d | 2027-11-03 | 2027-11-06 | CON-LEG101-LR-6230, CON-LEG101-LR-7450, CON-LEG101-EN-3340, CON-LEG101-EN-3440, CON-LEG101-LR-4900 SS |  | -68d |
| CON-LEG101-LR-4980 |  | Sand bedding for Secondary Irrigation [Local – 04 ] | 6d | 2027-11-07 | 2027-11-13 | CON-LEG101-LR-4910 |  | -68d |
| CON-LEG101-LR-5050 |  | Installation of Pipe for Secondary Irrigation [Local – 04 ] | 8d | 2027-11-14 | 2027-11-22 | CON-LEG101-PR-3980, CON-LEG101-LR-4980, CON-LEG101-PR-3940 |  | -68d |
| CON-LEG101-LR-5120 |  | Sand Surround for Secondary Irrigation [Local – 04 ] | 3d | 2027-11-23 | 2027-11-25 | CON-LEG101-LR-5050 |  | -68d |
| CON-LEG101-LR-5190 |  | Installation of Micron Marker Magnetic Tape [Local – 04 ] | 5d | 2027-11-27 | 2027-12-01 | CON-LEG101-LR-5120 |  | -68d |
| CON-LEG101-LR-5250 |  | Backfilling to Subgrade Elevation [Local – 04 ] | 2d | 2027-12-02 | 2027-12-04 | CON-LEG101-LR-5190, CON-LEG101-EN-3440 |  | -68d |
| CON-LEG101-LR-5450 |  | Installation of tubing for risers connections from laterals [Local – 04 ] | 2d | 2027-12-05 | 2027-12-06 | CON-LEG101-LR-5250, CON-LEG101-PR-2770 |  | -68d |

| ID | WBS | Task | Duration | Start | Finish | Predecessors | Complete | Total float |
| --- | --- | --- | --- | --- | --- | --- | --- | --- |
|  | 2 | **Valves and Controller** |  | 2027-11-23 | 2027-12-22 |  |  |  |
| CON-LEG101-LR-5290 |  | Installation of Electrical Solenoid Valve [Local – 04 ] | 6d | 2027-11-23 | 2027-11-29 | CON-LEG101-LR-5050, CON-LEG101-PR-3020 |  | -68d |
| CON-LEG101-LR-5330 |  | Installation of quick coupler valve [Local – 04 ] | 6d | 2027-11-30 | 2027-12-06 | CON-LEG101-LR-5290, CON-LEG101-PR-3030 |  | -68d |
| CON-LEG101-LR-5390 |  | Installation of a Flush valve [Local – 04 ] | 5d | 2027-12-07 | 2027-12-12 | CON-LEG101-PR-2760, CON-LEG101-LR-5330, CON-LEG101-PR-3110, CON-LEG101-LR-5450 |  | -68d |
| CON-LEG101-LR-5500 |  | Install single station decoder for valve connection [Local – 04 ] | 7d | 2027-12-13 | 2027-12-20 | CON-LEG101-PR-2830, CON-LEG101-LR-5390, CON-LEG101-PR-3150 |  | -68d |
| CON-LEG101-LR-5560 |  | Installation of Decoder cables 12 AWG between valves and controllers [Local – 04 ] | 2d | 2027-12-21 | 2027-12-22 | CON-LEG101-PR-2790, CON-LEG101-LR-5500, CON-LEG101-PR-3050 |  | -68d |
|  | 14 | **Curbs and edging** |  | 2027-12-23 | 2027-12-26 |  |  |  |
| CON-LEG101-LR-4840 |  | Installation of Curbs and edging [Local – 04 ] | 3d | 2027-12-23 | 2027-12-26 | CON-LEG101-LR-5560, CON-LEG101-PR-3070, CON-LEG101-EN-3400 |  | -68d |
|  | 13 | **Landscape** |  | 2027-12-27 | 2028-01-05 |  |  |  |
| CON-LEG101-LR-4620 |  | Site preparation for Planting Area [Local – 04 ] | 3d | 2027-12-27 | 2027-12-29 | CON-LEG101-LR-4840, CON-LEG101-EN-3370, CON-LEG101-EN-3440 |  | -68d |
| CON-LEG101-LR-4690 |  | Placing Agricutural Soil [Local – 04 ] | 3d | 2027-12-30 | 2028-01-02 | CON-LEG101-LR-4620, CON-LEG101-EN-3380 |  | -68d |
| CON-LEG101-LR-4760 |  | Planting Shrubs And Ground Cover [Local – 04 ] | 3d | 2028-01-03 | 2028-01-05 | CON-LEG101-LR-4690, CON-LEG101-EN-3390, CON-LEG101-PR-3060 |  | -68d |
|  | 6 | **Local – 06** |  | 2026-10-31 | 2027-12-23 |  |  |  |
|  | 2 | **Irrigation Works** |  | 2026-10-31 | 2027-12-06 |  |  |  |
|  | 1 | **Secondary Irrigation** |  | 2026-10-31 | 2027-12-06 |  |  |  |
|  | 1 | **Pipe Work** |  | 2026-10-31 | 2027-11-08 |  |  |  |
| CON-LEG101-LR-4920 |  | Excavation for Secondary Irrigation [Local – 06 ] | 3d | 2026-10-31 A | 2027-11-03 | CON-LEG101-LR-6250, CON-LEG101-LR-7470, CON-LEG101-EN-3340, CON-LEG101-EN-3440, CON-LEG101-LR-4910 SS | 75% | -56.25d |
| CON-LEG101-LR-5060 |  | Installation of Pipe for Secondary Irrigation [Local – 06 ] | 3d | 2026-11-01 A | 2027-11-04 | CON-LEG101-LR-4920, CON-LEG101-PR-3980, CON-LEG101-PR-3940 | 75% | -56.25d |
| CON-LEG101-LR-5260 |  | Backfilling to Subgrade Elevation [Local – 06 ] | 3d | 2026-11-02 A | 2027-11-06 | CON-LEG101-LR-5060, CON-LEG101-EN-3440 | 75% | -56.25d |
| CON-LEG101-LR-5460 |  | Installation of tubing for risers connections from laterals [Local – 06 ] | 8d | 2026-11-02 A | 2027-11-08 | CON-LEG101-LR-5260, CON-LEG101-PR-2770 | 75% | -56.25d |
|  | 2 | **Valves and Controller** |  | 2027-11-08 | 2027-12-06 |  |  |  |
| CON-LEG101-LR-5300 |  | Installation of Electrical Solenoid Valve [Local – 06 ] | 4d | 2027-11-08 | 2027-11-13 | CON-LEG101-LR-5060, CON-LEG101-PR-3020, CON-LEG101-LR-5460 |  | -56.25d |
| CON-LEG101-LR-5340 |  | Installation of quick coupler valve [Local – 06 ] | 4d | 2027-11-13 | 2027-11-17 | CON-LEG101-LR-5300, CON-LEG101-PR-3030 |  | -56.25d |
| CON-LEG101-LR-5400 |  | Installation of a Flush valve [Local – 06 ] | 5d | 2027-11-17 | 2027-11-23 | CON-LEG101-PR-2760, CON-LEG101-LR-5340, CON-LEG101-PR-3110 |  | -56.25d |
| CON-LEG101-LR-5510 |  | Install single station decoder for valve connection [Local – 06 ] | 5d | 2027-11-23 | 2027-11-29 | CON-LEG101-PR-2830, CON-LEG101-LR-5400, CON-LEG101-PR-3150 |  | -56.25d |
| CON-LEG101-LR-5570 |  | Installation of Decoder cables 12 AWG between valves and controllers [Local – 06 ] | 6d | 2027-11-29 | 2027-12-06 | CON-LEG101-PR-2790, CON-LEG101-LR-5510, CON-LEG101-PR-3050 |  | -56.25d |
|  | 14 | **Curbs and edging** |  | 2027-12-06 | 2027-12-09 |  |  |  |
| CON-LEG101-LR-4850 |  | Installation of Curbs and edging [Local – 06 ] | 3d | 2027-12-06 | 2027-12-09 | CON-LEG101-LR-5570, CON-LEG101-PR-3070, CON-LEG101-EN-3400 |  | -56.25d |
|  | 13 | **Landscape** |  | 2027-12-09 | 2027-12-23 |  |  |  |
| CON-LEG101-LR-4630 |  | Site preparation for Planting Area [Local – 06 ] | 4d | 2027-12-09 | 2027-12-14 | CON-LEG101-LR-4850, CON-LEG101-EN-3370, CON-LEG101-EN-3440 |  | -56.25d |
| CON-LEG101-LR-4700 |  | Placing Agricutural Soil [Local – 06 ] | 4d | 2027-12-14 | 2027-12-19 | CON-LEG101-LR-4630, CON-LEG101-EN-3380 |  | -56.25d |
| CON-LEG101-LR-4770 |  | Planting Shrubs And Ground Cover [Local – 06 ] | 4d | 2027-12-19 | 2027-12-23 | CON-LEG101-LR-4700, CON-LEG101-EN-3390, CON-LEG101-PR-3060 |  | -56.25d |
|  | 1 | **Roundabout - 01 (L01 & L04)** |  | 2026-11-02 | 2028-04-08 |  |  |  |
|  | 1 | **Irrigation Works** |  | 2026-11-02 | 2028-01-18 |  |  |  |
|  | 1 | **Secondary Irrigation** |  | 2026-11-02 | 2028-01-18 |  |  |  |
|  | 1 | **Pipe Work** |  | 2026-11-02 | 2027-12-28 |  |  |  |
| CON-LEG101-RA-1120 |  | Excavation for Secondary Irrigation [Roundabout : 01 ] | 11d | 2026-11-02 A | 2027-11-09 | CON-LEG101-LR-6230, CON-LEG101-LR-6180, CON-LEG101-SD-1000, CON-LEG101-SD-1010, CON-LEG101-SD-1020, CON-LEG101-SD-1030, CON-LEG101-LR-4870, CON-LEG101-EN-3340, CON-LEG101-EN-3440 | 50% | -147.5d |
| CON-LEG101-RA-1150 |  | Sand bedding for Secondary Irrigation [Roundabout : 01 ] | 11d | 2026-11-03 A | 2027-11-15 | CON-LEG101-RA-1120 | 50% | -147.5d |
| CON-LEG101-RA-1180 |  | Installation of Pipe for Secondary Irrigation [Roundabout : 01 ] | 11d | 2026-11-04 A | 2027-11-22 | CON-LEG101-PR-3980, CON-LEG101-RA-1150, CON-LEG101-PR-3940 | 50% | -147.5d |
| CON-LEG101-RA-1210 |  | Sand Surround for Secondary Irrigation [Roundabout : 01 ] | 14d | 2026-11-05 A | 2027-11-30 | CON-LEG101-RA-1180 | 50% | -118d |
| CON-LEG101-RA-1240 |  | Installation of Micron Marker Magnetic Tape [Roundabout : 01 ] | 14d | 2026-11-07 A | 2027-12-08 | CON-LEG101-RA-1210 | 50% | -118d |
| CON-LEG101-RA-1270 |  | Backfilling to Subgrade Elevation [Roundabout : 01 ] | 14d | 2026-11-07 A | 2027-12-16 | CON-LEG101-RA-1240, CON-LEG101-EN-3440 | 50% | -118d |
| CON-LEG101-RA-1390 |  | Installation of tubing for risers connections from laterals [Roundabout : 01 ] | 21d | 2026-11-08 A | 2027-12-28 | CON-LEG101-RA-1270, CON-LEG101-PR-2770 | 50% | -118d |
|  | 2 | **Valves and Controller** |  | 2027-11-22 | 2028-01-18 |  |  |  |
| CON-LEG101-RA-1300 |  | Installation of Electrical Solenoid Valve [Roundabout : 01 ] | 5d | 2027-11-22 | 2027-11-28 | CON-LEG101-RA-1180, CON-LEG101-PR-3020 |  | -147.5d |
| CON-LEG101-RA-1330 |  | Installation of quick coupler valve [Roundabout : 01 ] | 5d | 2027-11-28 | 2027-12-04 | CON-LEG101-RA-1300, CON-LEG101-PR-3030 |  | -147.5d |
| CON-LEG101-RA-1360 |  | Installation of a Flush valve [Roundabout : 01 ] | 11d | 2027-12-04 | 2027-12-16 | CON-LEG101-PR-2760, CON-LEG101-RA-1330, CON-LEG101-PR-3110 |  | -147.5d |
| CON-LEG101-RA-1420 |  | Install single station decoder for valve connection [Roundabout : 01 ] | 14d | 2027-12-16 | 2028-01-02 | CON-LEG101-PR-2830, CON-LEG101-RA-1360, CON-LEG101-PR-3150 |  | -147.5d |
| A |  | Catch | 14d | 2028-01-02 | 2028-01-18 | CON-LEG101-PR-2790, CON-LEG101-RA-1420, CON-LEG101-PR-3050 |  | -147.5d |
|  | 3 | **Curbs and edging** |  | 2028-01-18 | 2028-02-01 |  |  |  |
| CON-LEG101-RA-1090 |  | Installation of Curbs and edging [Roundabout : 01 ] | 12d | 2028-01-18 | 2028-02-01 | A, CON-LEG101-PR-3070, CON-LEG101-EN-3400 |  | -147.5d |
|  | 2 | **Landscape** |  | 2028-02-01 | 2028-04-08 |  |  |  |
| CON-LEG101-RA-1000 |  | Site preparation for Planting Area [Roundabout : 01 ] | 19d | 2028-02-01 | 2028-02-23 | CON-LEG101-RA-1090, CON-LEG101-EN-3370, CON-LEG101-EN-3440, CON-LEG101-RA-1390 |  | -147.5d |
| CON-LEG101-RA-1030 |  | Placing Agricutural Soil [Roundabout : 01 ] | 19d | 2028-02-23 | 2028-03-16 | CON-LEG101-RA-1000, CON-LEG101-EN-3380, CON-LEG101-MS-1010 |  | -147.5d |
| CON-LEG101-RA-1060 |  | Planting Shrubs And Ground Cover [Roundabout : 01 ] | 19d | 2028-03-16 | 2028-04-08 | CON-LEG101-RA-1030, CON-LEG101-EN-3390, CON-LEG101-PR-3060, CON-LEG101-MS-1010 |  | -147.5d |
|  | 4 | **Roundabout - 02 (L01 & L03)** |  | 2026-11-01 | 2028-03-25 |  |  |  |
|  | 1 | **Irrigation Works** |  | 2026-11-01 | 2028-02-15 |  |  |  |
|  | 1 | **Secondary Irrigation** |  | 2026-11-01 | 2028-02-15 |  |  |  |
|  | 1 | **Pipe Work** |  | 2026-11-01 | 2028-01-19 |  |  |  |
| CON-LEG101-RA-1130 |  | Excavation for Secondary Irrigation [Roundabout : 02 ] | 11d | 2026-11-01 A | 2027-12-20 | CON-LEG101-RA-1360, CON-LEG101-LR-6180, CON-LEG101-LR-6190, CON-LEG101-LR-6220, CON-LEG101-SD-1000, CON-LEG101-SD-1010, CON-LEG101-SD-1020, CON-LEG101-SD-1030, CON-LEG101-EN-3340, CON-LEG101-EN-3440, CON-LEG101-RA-1120 | 70% | -135.4d |
| CON-LEG101-RA-1160 |  | Sand bedding for Secondary Irrigation [Roundabout : 02 ] | 11d | 2026-11-02 A | 2027-12-25 | CON-LEG101-RA-1130 | 70% | -135.4d |
| CON-LEG101-RA-1190 |  | Installation of Pipe for Secondary Irrigation [Roundabout : 02 ] | 11d | 2026-11-03 A | 2027-12-28 | CON-LEG101-PR-3980, CON-LEG101-RA-1160, CON-LEG101-PR-3940 | 70% | -135.4d |
| CON-LEG101-RA-1220 |  | Sand Surround for Secondary Irrigation [Roundabout : 02 ] | 14d | 2026-11-04 A | 2028-01-02 | CON-LEG101-RA-1190 | 70% | -79.3d |
| CON-LEG101-RA-1250 |  | Installation of Micron Marker Magnetic Tape [Roundabout : 02 ] | 14d | 2026-11-05 A | 2028-01-06 | CON-LEG101-RA-1220 | 70% | -79.3d |
| CON-LEG101-RA-1280 |  | Backfilling to Subgrade Elevation [Roundabout : 02 ] | 14d | 2026-11-07 A | 2028-01-11 | CON-LEG101-RA-1250, CON-LEG101-EN-3440 | 70% | -79.3d |
| CON-LEG101-RA-1400 |  | Installation of tubing for risers connections from laterals [Roundabout : 02 ] | 21d | 2026-11-09 A | 2028-01-19 | CON-LEG101-RA-1280, CON-LEG101-PR-2770 | 70% | -79.3d |
|  | 2 | **Valves and Controller** |  | 2027-12-28 | 2028-02-15 |  |  |  |
| CON-LEG101-RA-1310 |  | Installation of Electrical Solenoid Valve [Roundabout : 02 ] | 5d | 2027-12-28 | 2028-01-03 | CON-LEG101-RA-1190, CON-LEG101-PR-3020 |  | -135.4d |
| CON-LEG101-RA-1340 |  | Installation of quick coupler valve [Roundabout : 02 ] | 5d | 2028-01-03 | 2028-01-09 | CON-LEG101-RA-1310, CON-LEG101-PR-3030 |  | -135.4d |
| CON-LEG101-RA-1370 |  | Installation of a Flush valve [Roundabout : 02 ] | 11d | 2028-01-09 | 2028-01-22 | CON-LEG101-PR-2760, CON-LEG101-RA-1340, CON-LEG101-PR-3110 |  | -135.4d |

| ID | WBS | Task | Duration | Start | Finish | Predecessors | Complete | Total float |
| --- | --- | --- | --- | --- | --- | --- | --- | --- |
| CON-LEG101-RA-1430 |  | Install single station decoder for valve connection [Roundabout : 02 ] | 7d | 2028-01-22 | 2028-01-30 | CON-LEG101-PR-2830, CON-LEG101-RA-1370, CON-LEG101-PR-3150 |  | -135.4d |
| CON-LEG101-RA-1460 |  | Installation of Decoder cables 12 AWG between valves and controllers [Roundabout : 02 ] | 14d | 2028-01-30 | 2028-02-15 | CON-LEG101-PR-2790, CON-LEG101-RA-1430, CON-LEG101-PR-3050 |  | -135.4d |
|  | 3 | **Curbs and edging** |  | 2028-02-15 | 2028-02-19 |  |  |  |
| CON-LEG101-RA-1100 |  | Installation of Curbs and edging [Roundabout : 02 ] | 3d | 2028-02-15 | 2028-02-19 | CON-LEG101-RA-1460, CON-LEG101-PR-3070, CON-LEG101-EN-3400 |  | -135.4d |
|  | 2 | **Landscape** |  | 2028-02-19 | 2028-03-25 |  |  |  |
| CON-LEG101-RA-1010 |  | Site preparation for Planting Area [Roundabout : 02 ] | 10d | 2028-02-19 | 2028-03-01 | CON-LEG101-RA-1100, CON-LEG101-EN-3370, CON-LEG101-EN-3440 |  | -135.4d |
| CON-LEG101-RA-1040 |  | Placing Agricutural Soil [Roundabout : 02 ] | 10d | 2028-03-01 | 2028-03-13 | CON-LEG101-RA-1010, CON-LEG101-EN-3380 |  | -135.4d |
| CON-LEG101-RA-1070 |  | Planting Shrubs And Ground Cover [Roundabout : 02 ] | 10d | 2028-03-13 | 2028-03-25 | CON-LEG101-RA-1040, CON-LEG101-EN-3390, CON-LEG101-PR-3060 |  | -135.4d |
|  | 2 | **Roundabout - 03 (L03 & L05)** |  | 2026-10-25 | 2028-03-14 |  |  |  |
|  | 1 | **Irrigation Works** |  | 2026-10-25 | 2028-02-16 |  |  |  |
|  | 1 | **Secondary Irrigation** |  | 2026-10-25 | 2028-02-16 |  |  |  |
|  | 1 | **Pipe Work** |  | 2026-10-25 | 2028-01-13 |  |  |  |
| CON-LEG101-RA-1140 |  | Excavation for Secondary Irrigation [Roundabout : 03 ] | 11d | 2026-10-25 A | 2027-12-23 | CON-LEG101-LR-6220, CON-LEG101-LR-6240, CON-LEG101-SD-1000, CON-LEG101-SD-1010, CON-LEG101-SD-1020, CON-LEG101-SD-1030, CON-LEG101-EN-3340, CON-LEG101-EN-3440, CON-LEG101-RA-1130 | 75% | -126.8d |
| CON-LEG101-RA-1170 |  | Sand bedding for Secondary Irrigation [Roundabout : 03 ] | 10d | 2026-10-26 A | 2027-12-27 | CON-LEG101-RA-1140 | 75% | -126.8d |
| CON-LEG101-RA-1200 |  | Installation of Pipe for Secondary Irrigation [Roundabout : 03 ] | 11d | 2026-10-27 A | 2027-12-29 | CON-LEG101-RA-1170, CON-LEG101-PR-3940 | 75% | -126.8d |
| CON-LEG101-RA-1230 |  | Sand Surround for Secondary Irrigation [Roundabout : 03 ] | 11d | 2026-10-28 A | 2028-01-02 | CON-LEG101-RA-1200 | 75% | -74.8d |
| CON-LEG101-RA-1260 |  | Installation of Micron Marker Magnetic Tape [Roundabout : 03 ] | 11d | 2026-10-29 A | 2028-01-05 | CON-LEG101-RA-1230 | 75% | -74.8d |
| CON-LEG101-RA-1290 |  | Backfilling to Subgrade Elevation [Roundabout : 03 ] | 11d | 2026-10-31 A | 2028-01-09 | CON-LEG101-RA-1260, CON-LEG101-EN-3440 | 75% | -74.8d |
| CON-LEG101-RA-1410 |  | Installation of tubing for risers connections from laterals [Roundabout : 03 ] | 19d | 2026-11-01 A | 2028-01-13 | CON-LEG101-RA-1290, CON-LEG101-PR-2770 | 75% | -74.8d |
|  | 2 | **Valves and Controller** |  | 2027-12-29 | 2028-02-16 |  |  |  |
| CON-LEG101-RA-1320 |  | Installation of Electrical Solenoid Valve [Roundabout : 03 ] | 5d | 2027-12-29 | 2028-01-04 | CON-LEG101-RA-1200, CON-LEG101-PR-3020 |  | -126.8d |
| CON-LEG101-RA-1350 |  | Installation of quick coupler valve [Roundabout : 03 ] | 5d | 2028-01-04 | 2028-01-10 | CON-LEG101-RA-1320, CON-LEG101-PR-3030 |  | -126.8d |
| CON-LEG101-RA-1380 |  | Installation of a Flush valve [Roundabout : 03 ] | 11d | 2028-01-10 | 2028-01-23 | CON-LEG101-PR-2760, CON-LEG101-RA-1350, CON-LEG101-PR-3110 |  | -126.8d |
| CON-LEG101-RA-1440 |  | Install single station decoder for valve connection [Roundabout : 03 ] | 7d | 2028-01-23 | 2028-01-31 | CON-LEG101-PR-2830, CON-LEG101-RA-1380, CON-LEG101-PR-3150 |  | -126.8d |
| CON-LEG101-RA-1470 |  | Installation of Decoder cables 12 AWG between valves and controllers [Roundabout : 03 ] | 14d | 2028-01-31 | 2028-02-16 | CON-LEG101-PR-2790, CON-LEG101-RA-1440, CON-LEG101-PR-3050 |  | -126.8d |
|  | 3 | **Curbs and edging** |  | 2028-02-16 | 2028-02-20 |  |  |  |
| CON-LEG101-RA-1110 |  | Installation of Curbs and edging [Roundabout : 03 ] | 3d | 2028-02-16 | 2028-02-20 | CON-LEG101-RA-1470, CON-LEG101-PR-3070, CON-LEG101-EN-3400 |  | -126.8d |
|  | 2 | **Landscape** |  | 2028-02-20 | 2028-03-14 |  |  |  |
| CON-LEG101-RA-1020 |  | Site preparation for Planting Area [Roundabout : 03 ] | 7d | 2028-02-20 | 2028-02-28 | CON-LEG101-RA-1110, CON-LEG101-EN-3370, CON-LEG101-EN-3440 |  | -126.8d |
| CON-LEG101-RA-1050 |  | Placing Agricutural Soil [Roundabout : 03 ] | 6d | 2028-02-28 | 2028-03-06 | CON-LEG101-RA-1020, CON-LEG101-EN-3380 |  | -126.8d |
| CON-LEG101-RA-1080 |  | Planting Shrubs And Ground Cover [Roundabout : 03 ] | 7d | 2028-03-06 | 2028-03-14 | CON-LEG101-RA-1050, CON-LEG101-EN-3390, CON-LEG101-PR-3060 |  | -126.8d |
|  | 6 | **Testing & Commissioning** |  | 2026-06-15 | 2028-04-16 |  |  |  |
| CON-LEG101-TC-1020 |  | Test for Public Water Utility Distribution | 8d | 2026-06-15 A | 2028-01-03 | CON-LEG101-OBA-1410, CON-LEG101-OBA-1450, CON-LEG101-OBA-1440, CON-LEG101-OBA-1340, CON-LEG101-OBA-1430, CON-LEG101-OBA-1420, CON-LEG101-LR-1240 SS, CON-LEG101-PR-1960, CON-LEG101-OBA-1510, CON-LEG101-TC-1110, CON-LEG101-LR-10740, CON-LEG101-LR-1250, CON-LEG101-LR-10750, CON-LEG101-LR-1260, CON-LEG101-LR-10760, CON-LEG101-LR-1270, CON-LEG101-LR-10770, CON-LEG101-LR-1030, CON-LEG101-LR-10780, CON-LEG101-LR-10790, CON-LEG101-LR-1280, CON-LEG101-LR-10800, CON-LEG101-LR-10810, CON-LEG101-LR-1070, CON-LEG101-LR-10820, CON-LEG101-LR-1080, CON-LEG101-LR-10830, CON-LEG101-LR-1090, CON-LEG101-OBA-1220 | 80% | -101d |
| CON-LEG101-TC-1030 |  | Test for TSE Network | 7d | 2026-06-15 A | 2028-01-17 | CON-LEG101-LR-2470, CON-LEG101-TC-1010, CON-LEG101-LR-2630, CON-LEG101-PR-1970, CON-LEG101-LR-2070, CON-LEG101-LR-2680, CON-LEG101-LR-2090, CON-LEG101-LR-2690, CON-LEG101-LR-2100, CON-LEG101-LR-2110, CON-LEG101-LR-2710, CON-LEG101-LR-2110 FF, CON-LEG101-LR-2710 FF, CON-LEG101-LR-2120, CON-LEG101-LR-2720, CON-LEG101-LR-2130, CON-LEG101-LR-2730, CON-LEG101-LR-2140, CON-LEG101-LR-2740, CON-LEG101-LR-2150, CON-LEG101-LR-2530, CON-LEG101-LR-2160, CON-LEG101-LR-2540, CON-LEG101-LR-2170, CON-LEG101-LR-2750, CON-LEG101-OBA-1060, CON-LEG101-OBA-1070 | 80% | -92.4d |
| CON-LEG101-TC-1040 |  | Test for Sanitary Sewerage | 8d | 2026-06-15 A | 2028-01-04 | CON-LEG101-TC-1110, CON-LEG101-LR-3410, CON-LEG101-LR-3500, CON-LEG101-LR-3420, CON-LEG101-LR-3510, CON-LEG101-LR-3430, CON-LEG101-LR-3520, CON-LEG101-LR-3440, CON-LEG101-LR-3530, CON-LEG101-LR-3440 FF, CON-LEG101-LR-3530 FF, CON-LEG101-LR-3450, CON-LEG101-LR-3540, CON-LEG101-LR-3460, CON-LEG101-LR-3550, CON-LEG101-LR-3480, CON-LEG101-LR-3560, CON-LEG101-LR-3490, CON-LEG101-LR-3570, CON-LEG101-OBA-1140, CON-LEG101-OBA-1150, CON-LEG101-TC-1020 SS | 75% | -97.4d |
| CON-LEG101-TC-1050 |  | Test for Stormwater Utilities | 8d | 2026-06-15 A | 2028-01-06 | CON-LEG101-TC-1040, CON-LEG101-LR-4200, CON-LEG101-LR-4320, CON-LEG101-LR-4210, CON-LEG101-LR-4330, CON-LEG101-LR-4440, CON-LEG101-LR-4220, CON-LEG101-LR-4340, CON-LEG101-LR-4450, CON-LEG101-LR-4230, CON-LEG101-LR-4350, CON-LEG101-LR-4460, CON-LEG101-LR-4230 FF, CON-LEG101-LR-4350 FF, CON-LEG101-LR-4460 FF, CON-LEG101-LR-4240, CON-LEG101-LR-4250, CON-LEG101-LR-4370, CON-LEG101-LR-4470, CON-LEG101-LR-4260, CON-LEG101-LR-4380, CON-LEG101-LR-4480, CON-LEG101-LR-4280, CON-LEG101-LR-4390, CON-LEG101-LR-4490, CON-LEG101-LR-4290, CON-LEG101-LR-4400, CON-LEG101-LR-4500, CON-LEG101-LR-4300, CON-LEG101-LR-4410, CON-LEG101-LR-4510 | 75% | -97.4d |
| CON-LEG101-TC-1060 |  | Test for Bridge Work | 8d | 2026-06-15 A | 2028-01-10 | CON-LEG101-TC-1050, CON-LEG101-BR-1250, CON-LEG101-BR-1020, CON-LEG101-BR-1030, CON-LEG101-BR-1130, CON-LEG101-BR-1060, CON-LEG101-BR-1090, CON-LEG101-BR-1220, CON-LEG101-BR-1230, CON-LEG101-MS-1020 | 65% | -92.4d |
| CON-LEG101-TC-1080 |  | Test for Fence & Gate | 6d | 2026-06-15 A | 2027-12-14 | CON-LEG101-FG-1340, CON-LEG101-FG-1350, CON-LEG101-FG-1360, CON-LEG101-FG-1270, CON-LEG101-FG-1370, CON-LEG101-FG-1380, CON-LEG101-MS-1040 | 60% | -43d |
| CON-LEG101-TC-1000 |  | Test for Telecommunications Work | 6d | 2026-08-01 A | 2028-01-26 | CON-LEG101-TC-1100, CON-LEG101-LR-9330, CON-LEG101-LR-9340, CON-LEG101-LR-9350, CON-LEG101-LR-9360, CON-LEG101-LR-9360 FF, CON-LEG101-LR-9370, CON-LEG101-LR-9380, CON-LEG101-LR-9390, CON-LEG101-LR-9400, CON-LEG101-LR-9410, CON-LEG101-LR-9420 | 30% | -88.2d |
| CON-LEG101-TC-1010 |  | Test for Electrical Network | 8d | 2026-08-01 A | 2028-01-15 | CON-LEG101-TC-1060, CON-LEG101-LR-7680, CON-LEG101-LR-8760, CON-LEG101-LR-7690, CON-LEG101-LR-8770, CON-LEG101-LR-7700, CON-LEG101-LR-8780, CON-LEG101-LR-7710, CON-LEG101-LR-8790, CON-LEG101-LR-7710 FF, CON-LEG101-LR-8790 FF, CON-LEG101-LR-7720, CON-LEG101-LR-8800, CON-LEG101-LR-7730, CON-LEG101-LR-8810, CON-LEG101-LR-7740, CON-LEG101-LR-8820, CON-LEG101-LR-7750, CON-LEG101-LR-8050, CON-LEG101-LR-7760, CON-LEG101-LR-8060, CON-LEG101-LR-8500 | 40% | -92.4d |
| CON-LEG101-TC-1070 |  | Test for CCTV feeding system and GSM | 6d | 2026-08-01 A | 2028-01-30 | CON-LEG101-TC-1000, CON-LEG101-LR-9940, CON-LEG101-LR-9950, CON-LEG101-LR-9960, CON-LEG101-LR-9970, CON-LEG101-LR-9980, CON-LEG101-LR-9990, CON-LEG101-LR-10000, CON-LEG101-LR-10010, CON-LEG101-LR-10020, CON-LEG101-LR-10030 | 40% | -86d |
| CON-LEG101-TC-1100 |  | Test for Road Lighting | 6d | 2026-08-01 A | 2028-01-20 | CON-LEG101-LR-8330, CON-LEG101-TC-1030, CON-LEG101-LR-8430, CON-LEG101-LR-8440, CON-LEG101-LR-8450, CON-LEG101-LR-8460, CON-LEG101-LR-8370, CON-LEG101-LR-8380, CON-LEG101-LR-8390, CON-LEG101-LR-8400, CON-LEG101-LR-8410, CON-LEG101-LR-8470 | 40% | -88.2d |
| CON-LEG101-TC-1110 |  | Test for Road Works | 8d | 2026-08-01 A | 2028-01-02 | CON-LEG101-LR-6780, CON-LEG101-LR-6680, CON-LEG101-LR-6180, CON-LEG101-LR-6280, CON-LEG101-LR-6380, CON-LEG101-LR-6080, CON-LEG101-LR-6800, CON-LEG101-LR-6700, CON-LEG101-LR-6200, CON-LEG101-LR-6300, CON-LEG101-LR-6400, CON-LEG101-LR-6100, CON-LEG101-LR-6110, CON-LEG101-LR-6410, CON-LEG101-LR-6310, CON-LEG101-LR-6210, CON-LEG101-LR-6710, CON-LEG101-LR-6810, CON-LEG101-LR-6120, CON-LEG101-LR-6420, CON-LEG101-LR-6320, CON-LEG101-LR-6220, CON-LEG101-LR-6720, CON-LEG101-LR-6820, CON-LEG101-LR-6130, CON-LEG101-LR-6430, CON-LEG101-LR-6330, CON-LEG101-LR-6230, CON-LEG101-LR-6730, CON-LEG101-LR-6830, CON-LEG101-LR-6140, CON-LEG101-LR-6440, CON-LEG101-LR-6340, CON-LEG101-LR-6240, CON-LEG101-LR-6740, CON-LEG101-LR-6840, CON-LEG101-LR-6150, CON-LEG101-LR-6450, CON-LEG101-LR-6350, CON-LEG101-LR-6250, CON-LEG101-LR-6750, CON-LEG101-LR-6850, CON-LEG101-LR-6160, CON-LEG101-LR-6460, CON-LEG101-LR-6360, CON-LEG101-LR-6260, CON-LEG101-LR-6760, CON-LEG101-LR-6860, CON-LEG101-LR-6170, CON-LEG101-LR-6470, CON-LEG101-LR-6370, CON-LEG101-LR-6270, CON-LEG101-LR-6770, CON-LEG101-LR-6870, CON-LEG101-MS-1010 | 70% | -109.4d |
| CON-LEG101-TC-1120 |  | Test for Earthing System | 6d | 2026-08-01 A | 2028-02-03 | CON-LEG101-LR-8330, CON-LEG101-TC-1070, CON-LEG101-LR-15130, CON-LEG101-LR-15140, CON-LEG101-LR-15150, CON-LEG101-LR-15160, CON-LEG101-LR-15170, CON-LEG101-LR-8280, CON-LEG101-LR-8290, CON-LEG101-LR-8300, CON-LEG101-LR-8310, CON-LEG101-LR-8320 | 30% | -86d |
| CON-LEG101-TC-1090 |  | Test for Irrigation and Landscape | 7d | 2028-04-08 | 2028-04-16 | CON-LEG101-TC-1000 SS, CON-LEG101-LR-5410, CON-LEG101-LR-5520, CON-LEG101-LR-4790, CON-LEG101-LR-4720, CON-LEG101-LR-5420, CON-LEG101-LR-5530, CON-LEG101-LR-4800, CON-LEG101-LR-4730, CON-LEG101-LR-5430, CON-LEG101-LR-5540, CON-LEG101-LR-4810, CON-LEG101-LR-4740, CON-LEG101-LR-5440, CON-LEG101-LR-5550, CON-LEG101-LR-4830, CON-LEG101-LR-4750, CON-LEG101-LR-5450, CON-LEG101-LR-5560, CON-LEG101-LR-4840, CON-LEG101-LR-4760, CON-LEG101-LR-5460, CON-LEG101-LR-5570, CON-LEG101-LR-4850, CON-LEG101-LR-4770, CON-LEG101-RA-1390, A, CON-LEG101-RA-1090, CON-LEG101-RA-1060, CON-LEG101-RA-1400, CON-LEG101-RA-1460, CON-LEG101-RA-1100, CON-LEG101-RA-1070, CON-LEG101-RA-1410, CON-LEG101-RA-1470, CON-LEG101-RA-1110, CON-LEG101-RA-1080, CON-LEG101-MS-1030 |  | -147.5d |
|  | 7 | **Project Close-out** |  | 2027-12-15 | 2028-05-09 |  |  |  |
|  | 1 | **As-Built DWGs** |  | 2027-12-15 | 2028-04-27 |  |  |  |
|  | 1 | **As-Built DWGs Submittal** |  | 2027-12-15 | 2028-04-22 |  |  |  |
| CON-LEG101-ABS-1080 |  | As-Built DWGs Submittal for Fence & Gate | 6d | 2027-12-15 | 2027-12-21 | CON-LEG101-TC-1080, CON-LEG101-FG-1380 |  | -43d |
| CON-LEG101-ABS-1110 |  | As-Built DWGs Submittal for Road Works | 12d | 2028-01-02 | 2028-01-16 | CON-LEG101-TC-1110 |  | -109.4d |
| CON-LEG101-ABS-1020 |  | As-Built DWGs Submittal for Public Water Utility Distribution | 12d | 2028-01-04 | 2028-01-17 | CON-LEG101-TC-1020 |  | -101d |
| CON-LEG101-ABS-1050 |  | As-Built DWGs Submittal for Stormwater Utilities | 12d | 2028-01-06 | 2028-01-20 | CON-LEG101-TC-1050 |  | -97.4d |
| CON-LEG101-ABS-1060 |  | As-Built DWGs Submittal for Bridge Work | 12d | 2028-01-10 | 2028-01-24 | CON-LEG101-TC-1060 |  | -86.2d |
| CON-LEG101-ABS-1030 |  | As-Built DWGs Submittal for TSE Network | 12d | 2028-01-17 | 2028-01-31 | CON-LEG101-TC-1030 |  | -92.4d |
| CON-LEG101-ABS-1040 |  | As-Built DWGs Submittal for Sanitary Sewerage | 12d | 2028-01-20 | 2028-02-03 | CON-LEG101-TC-1040, CON-LEG101-ABS-1020, CON-LEG101-ABS-1050 |  | -97.4d |
| CON-LEG101-ABS-1100 |  | As-Built DWGs Submittal for Road Lighting | 12d | 2028-01-22 | 2028-02-03 | CON-LEG101-TC-1100 |  | -86d |
| CON-LEG101-ABS-1000 |  | As-Built DWGs Submittal for Telecommunications Work | 12d | 2028-01-26 | 2028-02-09 | CON-LEG101-TC-1000 |  | -88.2d |
| CON-LEG101-ABS-1070 |  | As-Built DWGs Submittal for CCTV feeding system and GSM | 8d | 2028-01-30 | 2028-02-08 | CON-LEG101-TC-1070 |  | -84.8d |
| CON-LEG101-ABS-1010 |  | As-Built DWGs Submittal for Electrical Network | 12d | 2028-02-03 | 2028-02-17 | CON-LEG101-TC-1010, CON-LEG101-ABS-1040 |  | -97.4d |
| CON-LEG101-ABS-1120 |  | As-Built DWGs Submittal for Earthing System | 5d | 2028-02-05 | 2028-02-09 | CON-LEG101-TC-1120 |  | -86d |
| CON-LEG101-ABS-1090 |  | As-Built DWGs Submittal for Irrigation and Landscape | 5d | 2028-04-16 | 2028-04-22 | CON-LEG101-TC-1090 |  | -147.5d |
|  | 2 | **As-Built DWGs Approval** |  | 2027-12-22 | 2028-04-27 |  |  |  |
| CON-LEG101-ABA-1080 |  | As- Built DWGs Approval for Fence & Gate | 5d | 2027-12-22 | 2027-12-27 | CON-LEG101-ABS-1080 |  | -43d |
| CON-LEG101-ABA-1110 |  | As- Built DWGs Approval for Road Works | 10d | 2028-01-16 | 2028-01-27 | CON-LEG101-ABS-1110 |  | -109.4d |
| CON-LEG101-ABA-1020 |  | As- Built DWGs Approval for Public Water Utility Distribution | 10d | 2028-01-27 | 2028-02-08 | CON-LEG101-ABS-1020, CON-LEG101-ABA-1110 |  | -109.4d |
| CON-LEG101-ABA-1030 |  | As- Built DWGs Approval for TSE Network | 10d | 2028-01-31 | 2028-02-12 | CON-LEG101-ABS-1030 |  | -92.4d |
| CON-LEG101-ABA-1100 |  | As- Built DWGs Approval for Road Lighting | 10d | 2028-02-05 | 2028-02-15 | CON-LEG101-ABS-1100 |  | -86d |
| CON-LEG101-ABA-1050 |  | As- Built DWGs Approval for Stormwater Utilities | 10d | 2028-02-08 | 2028-02-20 | CON-LEG101-ABS-1050, CON-LEG101-ABA-1020 |  | -109.4d |
| CON-LEG101-ABA-1070 |  | As- Built DWGs Approval for CCTV feeding system and GSM | 5d | 2028-02-08 | 2028-02-14 | CON-LEG101-ABS-1070 |  | -84.8d |
| CON-LEG101-ABA-1000 |  | As- Built DWGs Approval for Telecommunications Work | 8d | 2028-02-09 | 2028-02-19 | CON-LEG101-ABS-1000 |  | -88.2d |

| ID | WBS | Task | Duration | Start | Finish | Predecessors | Total float |
| --- | --- | --- | --- | --- | --- | --- | --- |
| CON-LEG101-ABA-1120 |  | As- Built DWGs Approval for Earthing System | 5d | 2028-02-10 | 2028-02-15 | CON-LEG101-ABS-1120 | -86d |
| CON-LEG101-ABA-1060 |  | As- Built DWGs Approval for Bridge Work | 10d | 2028-02-20 | 2028-03-02 | CON-LEG101-ABS-1060, CON-LEG101-ABA-1050 | -109.4d |
| CON-LEG101-ABA-1010 |  | As- Built DWGs Approval for Electrical Network | 10d | 2028-03-02 | 2028-03-14 | CON-LEG101-ABS-1010, CON-LEG101-ABA-1060, CON-LEG101-ABA-1030 | -109.4d |
| CON-LEG101-ABA-1040 |  | As- Built DWGs Approval for Sanitary Sewerage | 10d | 2028-03-02 | 2028-03-14 | CON-LEG101-ABS-1040, CON-LEG101-ABA-1050, CON-LEG101-ABA-1060, CON-LEG101-ABA-1030 | -109.4d |
| CON-LEG101-ABA-1090 |  | As- Built DWGs Approval for Irrigation and Landscape | 5d | 2028-04-22 | 2028-04-27 | CON-LEG101-ABS-1090 | -147.5d |
|  | 2 | **Demobilization** |  | 2028-04-27 | 2028-05-09 |  |  |
| CON-LEG101-DM-1000 |  | Demobilization of Manpower | 5d | 2028-04-27 | 2028-05-03 | CON-LEG101-ABA-1000, CON-LEG101-ABA-1010, CON-LEG101-ABA-1020, CON-LEG101-ABA-1030, CON-LEG101-ABA-1040, CON-LEG101-ABA-1050, CON-LEG101-ABA-1060, CON-LEG101-ABA-1070, CON-LEG101-ABA-1080, CON-LEG101-ABA-1090, CON-LEG101-ABA-1100, CON-LEG101-ABA-1110, CON-LEG101-ABA-1120 | -147.5d |
| CON-LEG101-DM-1010 |  | Removal of Equipment from Site | 5d | 2028-04-27 | 2028-05-03 | CON-LEG101-ABA-1000, CON-LEG101-ABA-1010, CON-LEG101-ABA-1020, CON-LEG101-ABA-1030, CON-LEG101-ABA-1040, CON-LEG101-ABA-1050, CON-LEG101-ABA-1060, CON-LEG101-ABA-1070, CON-LEG101-ABA-1080, CON-LEG101-ABA-1090, CON-LEG101-ABA-1100, CON-LEG101-ABA-1110, CON-LEG101-ABA-1120 | -147.5d |
| CON-LEG101-DM-1020 |  | Site Clean Up | 5d | 2028-04-27 | 2028-05-03 | CON-LEG101-ABA-1000, CON-LEG101-ABA-1010, CON-LEG101-ABA-1020, CON-LEG101-ABA-1030, CON-LEG101-ABA-1040, CON-LEG101-ABA-1050, CON-LEG101-ABA-1060, CON-LEG101-ABA-1070, CON-LEG101-ABA-1080, CON-LEG101-ABA-1090, CON-LEG101-ABA-1100, CON-LEG101-ABA-1110, CON-LEG101-ABA-1120 | -147.5d |
| CON-LEG101-DM-1030 |  | Removal of Site Offices and Structures | 5d | 2028-04-27 | 2028-05-03 | CON-LEG101-ABA-1000, CON-LEG101-ABA-1010, CON-LEG101-ABA-1020, CON-LEG101-ABA-1030, CON-LEG101-ABA-1040, CON-LEG101-ABA-1050, CON-LEG101-ABA-1060, CON-LEG101-ABA-1070, CON-LEG101-ABA-1080, CON-LEG101-ABA-1090, CON-LEG101-ABA-1100, CON-LEG101-ABA-1110, CON-LEG101-ABA-1120 | -147.5d |
| CON-LEG101-DM-1040 |  | Restoration of Ground Surfaces | 5d | 2028-05-03 | 2028-05-09 | CON-LEG101-DM-1030, CON-LEG101-DM-1020, CON-LEG101-DM-1010, CON-LEG101-DM-1000 | -147.5d |

## Version 8 (data date 2026-11-17, saved 2026-11-17, file 02. JDH1-02-003 -ENJ-WPR-052-17-11-2026 Update Schedule.xer)

Last finish 2028-05-09 → 2028-04-06 (-33d). Complete tasks 1363 → 1375.

Changed:

| ID | Task | Start | Finish | Complete | Total float |
| --- | --- | --- | --- | --- | --- |
| 5 | **Milestones** |  | 2028-05-09 → 2028-04-06 (-33d) |  |  |
| 1 | **Key Milestones** |  | 2028-05-09 → 2028-04-06 (-33d) |  |  |
| CON-LEG101-MS-1000 | Project Completion Date | 2028-05-09 → 2028-04-06 (-33d) | 2028-05-09 → 2028-04-06 (-33d) |  | -147.5d → -119.5d |
| 2 | **Contractual Milestone** |  | 2028-05-09 → 2028-04-06 (-33d) |  |  |
| 4 | **Engineering** | 2026-11-28 → 2026-12-05 (+7d) | 2026-11-28 → 2026-12-05 (+7d) |  |  |
| CON-LEG101-MS-1060 | Finish Submission and Approval for Shop Drawings, Method of Statement, Prequalification and Materials | 2026-11-28 → 2026-12-05 (+7d) | 2026-11-28 → 2026-12-05 (+7d) |  | -45.5d → -17.5d |
| 1 | **Procurement** | 2026-11-22 → 2026-11-29 (+7d) | 2026-11-22 → 2026-11-29 (+7d) |  |  |
| CON-LEG101-MS-1100 | Finish PO for Short Lead Item & Long Lead Item | 2026-11-22 → 2026-11-29 (+7d) | 2026-11-22 → 2026-11-29 (+7d) |  | -39.7d → -11.7d |
| 5 | **Construction** | 2027-02-08 → 2027-02-20 (+12d) | 2028-05-09 → 2028-04-06 (-33d) |  |  |
| CON-LEG101-MS-1130 | Completion of Deep infrastructure network | 2027-02-08 → 2027-02-20 (+12d) | 2027-02-08 → 2027-02-20 (+12d) |  | 67.15d → 85.45d |
| CON-LEG101-MS-1120 | Completion of Roads & Meduim Voltage | 2027-07-10 → 2027-07-17 (+7d) | 2027-07-10 → 2027-07-17 (+7d) |  | -82.5d → -59.85d |
| CON-LEG101-MS-1140 | Completion of Shallow infrastructure network | 2027-10-24 → 2027-10-31 (+7d) | 2027-10-24 → 2027-10-31 (+7d) |  | -52.4d → -58.4d |
| CON-LEG101-MS-1150 | Completion all Works | 2028-05-09 → 2028-04-06 (-33d) | 2028-05-09 → 2028-04-06 (-33d) |  | -147.5d → -119.5d |
| 6 | **Monitoring and Control Milestone** | 2027-07-11 → 2027-07-18 (+7d) | 2028-04-08 → 2028-03-06 (-33d) |  |  |
| CON-LEG101-MS-1050 | Completion of Outside Boundary Area's Scope (Tie-in Lines) | 2027-07-11 → 2027-07-18 (+7d) | 2027-07-11 → 2027-07-18 (+7d) |  | 5.18d → -0.82d |
| CON-LEG101-MS-1010 | Completion of Roads Finishing | 2027-12-29 → 2028-01-05 (+7d) | 2027-12-29 → 2028-01-05 (+7d) |  | -109.4d → -115.4d |
| CON-LEG101-MS-1030 | Completion of Roundabout & Landscape works | 2028-04-08 → 2028-03-06 (-33d) | 2028-04-08 → 2028-03-06 (-33d) |  | -147.5d → -119.5d |
| 3 | **Engineering** |  | 2026-11-28 → 2026-12-05 (+7d) |  |  |
| 2 | **Shop Drawings** |  | 2026-11-28 → 2026-12-05 (+7d) |  |  |
| 1 | **Shop Drawings Submittal** |  | 2026-11-21 → 2026-11-28 (+7d) |  |  |
| 2 | **Shop Drawings Submittal for Electrical Network** |  | 2026-11-21 → 2026-11-28 (+7d) |  |  |
| CON-LEG101-EN-1390 | Shop DWG Submittal for Medium Voltage Network | 2026-11-11 → 2026-11-18 (+7d) | 2026-11-21 → 2026-11-28 (+7d) |  | -45.5d → -17.5d |
| 2 | **Shop Drawings Approval** |  | 2026-11-28 → 2026-12-05 (+7d) |  |  |
| 2 | **Shop Drawings Approval for Electrical Network** |  | 2026-11-28 → 2026-12-05 (+7d) |  |  |
| CON-LEG101-EN-1660 | Shop DWG Approval for Medium Voltage Network | 2026-11-22 → 2026-11-29 (+7d) | 2026-11-28 → 2026-12-05 (+7d) |  | -45.5d → -17.5d |
| 4 | **Pre-qualification and Material** |  | 2026-11-16 → 2026-11-23 (+7d) |  |  |
| 4 | **Electrical Network** |  | 2026-11-16 → 2026-11-23 (+7d) |  |  |
| 13 | **Ring Main Unit** |  | 2026-11-16 → 2026-11-23 (+7d) |  |  |
| CON-LEG101-SB-1710 | Pre-qualification and Material Approval for Ring Main Unit |  | 2026-11-16 → 2026-11-23 (+7d) |  | -39.7d → -11.7d |
| 14 | **Street Lighting Sub-station** |  | 2026-11-16 → 2026-11-23 (+7d) |  |  |
| CON-LEG101-SB-1750 | Pre-qualification and Material Approval for Street Lighting Sub-station |  | 2026-11-16 → 2026-11-23 (+7d) |  | -34.7d → -6.7d |
| 4 | **Procurement** |  | 2027-09-04 → 2027-08-22 (-13d) |  |  |
| 2 | **Short Lead Item** |  | 2027-09-04 → 2027-08-22 (-13d) |  |  |
| 1 | **Road Works - Civil** |  | 2027-09-04 → 2027-08-22 (-13d) |  |  |
| 9 | **Pavement Markings** |  | 2027-09-04 → 2026-11-10 (-298d) |  |  |
| CON-LEG101-PR-1600 | Material Delivery for Pavement Markings | 2027-08-12 → 2026-11-09 A (-276d) | 2027-08-30 → 2026-11-09 A (-294d) | 0% → 100% | -77.25d → none |
| CON-LEG101-PR-2070 | Staging Time for Pavement Markings | 2027-08-30 → 2026-11-10 A (-293d) | 2027-09-04 → 2026-11-10 A (-298d) | 0% → 100% | -77.25d → none |
| 6 | **Bituminous Base & Wearing Course** |  | 2027-08-15 → 2027-08-22 (+7d) |  |  |
| CON-LEG101-PR-1530 | Material Delivery for Wearing Course |  | 2027-08-15 → 2027-08-22 (+7d) |  | -77.25d → -56.25d |
| 1 | **Long Lead Item** |  | 2027-07-03 → 2027-07-10 (+7d) |  |  |
| 10 | **Fence & Gates** |  | 2027-02-17 → 2027-02-25 (+8d) |  |  |
| 2 | **Gates** |  | 2027-02-17 → 2027-02-25 (+8d) |  |  |
| CON-LEG101-PR-2040 | Material Fabrication for Gates |  | 2027-01-14 → 2027-01-21 (+7d) |  | 2.5d → 30.5d |
| CON-LEG101-PR-2050 | Material Delivery for Gates | 2027-01-16 → 2027-01-23 (+7d) | 2027-02-01 → 2027-02-08 (+7d) |  | 2.5d → 30.5d |
| CON-LEG101-PR-2090 | Staging Time for Gates | 2027-02-02 → 2027-02-14 (+12d) | 2027-02-17 → 2027-02-25 (+8d) |  | 2.5d → 30.5d |
| 1 | **Electrical Network** |  | 2027-07-03 → 2027-07-10 (+7d) |  |  |
| 12 | **Cable Termination & Joints** |  | 2027-04-13 → 2027-04-20 (+7d) |  |  |
| CON-LEG101-PR-1240 | PO for Cable Termination & Joints |  | 2026-11-16 → 2026-11-23 (+7d) |  | -115.5d → -87.5d |
| CON-LEG101-PR-1270 | Material Fabrication for Cable Termination & Joints | 2026-11-17 → 2026-11-24 (+7d) | 2027-03-07 → 2027-03-14 (+7d) |  | -115.5d → -87.5d |
| CON-LEG101-PR-1300 | Material Delivery for Cable Termination & Joints | 2027-03-08 → 2027-03-15 (+7d) | 2027-03-24 → 2027-03-31 (+7d) |  | -115.5d → -87.5d |
| CON-LEG101-PR-1450 | Stagging Time for Cable Termination & Joints | 2027-04-03 → 2027-04-10 (+7d) | 2027-04-13 → 2027-04-20 (+7d) |  | -122.5d → -94.5d |
| 1 | **Medium Voltage Cable** |  | 2027-04-01 → 2027-04-08 (+7d) |  |  |
| CON-LEG101-PR-1000 | PO for Medium Voltage Cable |  | 2026-11-16 → 2026-11-23 (+7d) |  | -130.5d → -102.5d |
| CON-LEG101-PR-1080 | Material Fabrication for Medium Voltage Cable | 2026-12-07 → 2026-12-14 (+7d) | 2027-02-18 → 2027-02-27 (+9d) |  | -147.5d → -119.5d |
| CON-LEG101-PR-1160 | Material Delivery for Medium Voltage Cable | 2027-02-27 → 2027-03-06 (+7d) | 2027-03-15 → 2027-03-22 (+7d) |  | -147.5d → -119.5d |
| CON-LEG101-PR-1880 | Staging Time for Medium Voltage Cable | 2027-03-16 → 2027-03-23 (+7d) | 2027-04-01 → 2027-04-08 (+7d) |  | -147.5d → -119.5d |
| 4 | **Street Lighting Sub-station** |  | 2027-06-03 → 2027-06-10 (+7d) |  |  |
| CON-LEG101-PR-1090 | Material Fabrication for Street Lighting Sub-station | 2027-02-20 → 2027-02-28 (+8d) | 2027-05-01 → 2027-05-08 (+7d) |  | -83.5d → -55.5d |
| CON-LEG101-PR-1170 | Material Delivery for Street Lighting Sub-station | 2027-05-02 → 2027-05-09 (+7d) | 2027-05-23 → 2027-05-30 (+7d) |  | -83.5d → -55.5d |
| CON-LEG101-PR-1890 | Staging Time for Street Lighting Sub-station | 2027-05-24 → 2027-05-31 (+7d) | 2027-06-03 → 2027-06-10 (+7d) |  | -83.5d → -55.5d |
| 2 | **Ring Main Unit** | 2026-11-16 → 2026-11-23 (+7d) | 2027-07-03 → 2027-07-10 (+7d) |  |  |
| CON-LEG101-PR-2480 | PO for Ring Main Unit | 2026-11-16 → 2026-11-23 (+7d) | 2026-11-22 → 2026-11-29 (+7d) |  | -39.7d → -11.7d |
| CON-LEG101-PR-2490 | Material Fabrication for Ring Main Unit | 2027-02-03 → 2027-02-15 (+12d) | 2027-05-01 → 2027-05-08 (+7d) |  | -58.5d → -30.5d |
| CON-LEG101-PR-2500 | Material Delivery for Ring Main Unit | 2027-06-05 → 2027-06-12 (+7d) | 2027-06-21 → 2027-06-28 (+7d) |  | -83.5d → -55.5d |
| CON-LEG101-PR-2510 | Staging Time for Ring Main Unit | 2027-06-22 → 2027-06-29 (+7d) | 2027-07-03 → 2027-07-10 (+7d) |  | -83.5d → -55.5d |
| 6 | **Landscape Works** |  | 2027-06-21 → 2027-06-28 (+7d) |  |  |
| 8 | **Shrubs And Ground Cover** |  | 2027-06-21 → 2027-06-28 (+7d) |  |  |
| CON-LEG101-PR-3000 | Material Delivery for agricultural soil | 2027-02-20 → 2027-02-28 (+8d) | 2027-06-09 → 2027-06-16 (+7d) |  | 81d → 75d |
| CON-LEG101-PR-3060 | Staging Time for agricultural soil | 2027-06-10 → 2027-06-17 (+7d) | 2027-06-21 → 2027-06-28 (+7d) |  | 81d → 75d |
| 4 | **Bridge Works** |  | 2027-03-15 → 2026-11-15 (-120d) |  |  |

| ID | Task | Start | Finish | Complete | Total float |
| --- | --- | --- | --- | --- | --- |
| 1 | **Guard Rail** |  | 2027-03-15 → 2026-11-15 (-120d) |  |  |
| CON-LEG101-PR-2280 | Material Delivery for Guard Rail |  | 2026-11-15 → 2026-11-14 A (-1d) | 75% → 100% | 142.25d → none |
| CON-LEG101-PR-2290 | Staging Time for Guard Rail | 2027-02-20 → 2026-11-15 A (-97d) | 2027-03-15 → 2026-11-15 A (-120d) | 0% → 100% | 64d → none |
| 1 | **Construction** |  | 2028-04-08 → 2028-03-06 (-33d) |  |  |
| 1 | **Roads & Meduim Voltage** |  | 2027-07-10 → 2027-07-17 (+7d) |  |  |
| 1 | **Local – 01** |  | 2027-06-23 → 2027-06-30 (+7d) |  |  |
| 1 | **LOCAL - 01 Segment-01 (From 0+000 to 1+066)** |  | 2027-05-05 → 2027-05-12 (+7d) |  |  |
| 8 | **Electrical Works** |  | 2027-05-05 → 2027-05-12 (+7d) |  |  |
| CON-LEG101-LR-15000 | Approval of Subcontractor / Supplier / Consultant for Medium Voltage from SEC | 2026-11-11 → 2026-11-18 (+7d) | 2026-11-22 → 2026-11-29 (+7d) |  | -147.5d → -119.5d |
| CON-LEG101-LR-15010 | Approval Materials of Medium Voltage from SEC | 2026-11-23 → 2026-11-30 (+7d) | 2026-12-03 → 2026-12-10 (+7d) |  | -147.5d → -119.5d |
| CON-LEG101-LR-15030 | PO for Medium Voltage | 2026-12-05 → 2026-12-12 (+7d) | 2026-12-06 → 2026-12-13 (+7d) |  | -147.5d → -119.5d |
| CON-LEG101-LR-15020 | Testing Materials of Medium Voltage from SEC | 2027-02-20 → 2027-02-28 (+8d) | 2027-02-25 → 2027-03-04 (+7d) |  | -147.5d → -119.5d |
| 2 | **Medium Voltage** |  | 2027-05-05 → 2027-05-12 (+7d) |  |  |
| CON-LEG101-LR-6880 | Excavation for Medium Voltage trench [Local – 01 Segment-01] | 2027-04-03 → 2027-04-10 (+7d) | 2027-04-10 → 2027-04-17 (+7d) |  | -147.5d → -119.5d |
| CON-LEG101-LR-7060 | Installation of Medium Voltage Cables [Local – 01 Segment-01] | 2027-04-11 → 2027-04-18 (+7d) | 2027-04-18 → 2027-04-25 (+7d) |  | -68.5d → -45.85d |
| CON-LEG101-LR-7150 | Installation of Straight joints cables [Local – 01 Segment-01] | 2027-04-19 → 2027-04-26 (+7d) | 2027-04-20 → 2027-04-27 (+7d) |  | -68.5d → -45.85d |
| CON-LEG101-LR-7240 | Installation of Cable Termination for 13.8 kv 3Cx 500 mm², Al /XLPE/LLDPE [Local – 01 Segment-01] | 2027-04-21 → 2027-04-28 (+7d) | 2027-04-24 → 2027-05-01 (+7d) |  | -68.5d → -45.85d |
| CON-LEG101-LR-7330 | Installation of Medium Voltage Switchgears [Local – 01 Segment-01] | 2027-04-25 → 2027-05-02 (+7d) | 2027-05-02 → 2027-05-09 (+7d) |  | -68.5d → -45.85d |
| CON-LEG101-LR-7680 | Installation of Cable Termination [Local – 01 Segment-01] | 2027-05-03 → 2027-05-10 (+7d) | 2027-05-05 → 2027-05-12 (+7d) |  | -68.5d → -45.85d |
| 2 | **LOCAL - 01 Segment-02 (From 1+066 to 2+133)** |  | 2027-05-27 → 2027-06-03 (+7d) |  |  |
| 8 | **Electrical Works** |  | 2027-05-27 → 2027-06-03 (+7d) |  |  |
| 2 | **Medium Voltage** |  | 2027-05-27 → 2027-06-03 (+7d) |  |  |
| CON-LEG101-LR-6890 | Excavation for Medium Voltage trench [Local – 01 Segment-02] | 2027-04-11 → 2027-04-18 (+7d) | 2027-04-18 → 2027-04-25 (+7d) |  | -147.5d → -119.5d |
| CON-LEG101-LR-7070 | Installation of Medium Voltage Cables [Local – 01 Segment-02] | 2027-04-19 → 2027-04-26 (+7d) | 2027-04-26 → 2027-05-03 (+7d) |  | -65.5d → -42.85d |
| CON-LEG101-LR-7160 | Installation of Straight joints cables [Local – 01 Segment-02] | 2027-04-27 → 2027-05-04 (+7d) | 2027-05-02 → 2027-05-09 (+7d) |  | -65.5d → -42.85d |
| CON-LEG101-LR-7250 | Installation of Cable Termination for 13.8 kv 3Cx 500 mm², Al /XLPE/LLDPE [Local – 01 Segment-02] | 2027-05-06 → 2027-05-13 (+7d) | 2027-05-09 → 2027-05-20 (+11d) |  | -68.5d → -45.85d |
| CON-LEG101-LR-7340 | Installation of Medium Voltage Switchgears [Local – 01 Segment-02] | 2027-05-10 → 2027-05-22 (+12d) | 2027-05-22 → 2027-05-29 (+7d) |  | -68.5d → -45.85d |
| CON-LEG101-LR-7690 | Installation of Cable Termination [Local – 01 Segment-02] | 2027-05-23 → 2027-05-30 (+7d) | 2027-05-27 → 2027-06-03 (+7d) |  | -68.5d → -45.85d |
| 3 | **LOCAL - 01 Segment-03 (From 2+133 to 3+200)** |  | 2027-06-23 → 2027-06-30 (+7d) |  |  |
| 8 | **Electrical Works** |  | 2027-06-23 → 2027-06-30 (+7d) |  |  |
| 2 | **Medium Voltage** |  | 2027-06-23 → 2027-06-30 (+7d) |  |  |
| CON-LEG101-LR-6900 | Excavation for Medium Voltage trench [Local – 01 Segment-03] | 2027-05-29 → 2027-06-05 (+7d) | 2027-06-01 → 2027-06-08 (+7d) |  | -68.5d → -45.85d |
| CON-LEG101-LR-7080 | Installation of Medium Voltage Cables [Local – 01 Segment-03] | 2027-06-02 → 2027-06-09 (+7d) | 2027-06-09 → 2027-06-16 (+7d) |  | -68.5d → -45.85d |
| CON-LEG101-LR-7170 | Installation of Straight joints cables [Local – 01 Segment-03] | 2027-06-10 → 2027-06-17 (+7d) | 2027-06-12 → 2027-06-19 (+7d) |  | -68.5d → -45.85d |
| CON-LEG101-LR-7260 | Installation of Cable Termination for 13.8 kv 3Cx 500 mm², Al /XLPE/LLDPE [Local – 01 Segment-03] | 2027-06-13 → 2027-06-20 (+7d) | 2027-06-15 → 2027-06-22 (+7d) |  | -68.5d → -45.85d |
| CON-LEG101-LR-7350 | Installation of Medium Voltage Switchgears [Local – 01 Segment-03] | 2027-06-16 → 2027-06-23 (+7d) | 2027-06-20 → 2027-06-27 (+7d) |  | -68.5d → -45.85d |
| CON-LEG101-LR-7700 | Installation of Cable Termination [Local – 01 Segment-03] | 2027-06-21 → 2027-06-28 (+7d) | 2027-06-23 → 2027-06-30 (+7d) |  | -68.5d → -45.85d |
| 4 | **Local – 02** |  | 2027-06-12 → 2027-06-19 (+7d) |  |  |
| 8 | **Electrical Works** |  | 2027-06-12 → 2027-06-19 (+7d) |  |  |
| 2 | **Medium Voltage** |  | 2027-06-12 → 2027-06-19 (+7d) |  |  |
| CON-LEG101-LR-6910 | Excavation for Medium Voltage trench [Local – 02 ] | 2027-04-19 → 2027-04-26 (+7d) | 2027-04-27 → 2027-05-04 (+7d) |  | -147.5d → -119.5d |
| CON-LEG101-LR-7090 | Installation of Medium Voltage Cables [Local – 02 ] | 2027-04-28 → 2027-05-05 (+7d) | 2027-05-12 → 2027-05-24 (+12d) |  | -147.5d → -119.5d |
| CON-LEG101-LR-7180 | Installation of Straight joints cables [Local – 02 ] | 2027-05-13 → 2027-05-25 (+12d) | 2027-05-24 → 2027-05-31 (+7d) |  | -147.5d → -119.5d |
| CON-LEG101-LR-7270 | Installation of Cable Termination for 13.8 kv 3Cx 500 mm², Al /XLPE/LLDPE [Local – 02 ] | 2027-05-25 → 2027-06-01 (+7d) | 2027-06-02 → 2027-06-09 (+7d) |  | -147.5d → -119.5d |
| CON-LEG101-LR-7360 | Installation of Medium Voltage Switchgears [Local – 02 ] | 2027-06-03 → 2027-06-10 (+7d) | 2027-06-08 → 2027-06-15 (+7d) |  | -147.5d → -119.5d |
| CON-LEG101-LR-7710 | Installation of Cable Termination [Local – 02 ] | 2027-06-09 → 2027-06-16 (+7d) | 2027-06-12 → 2027-06-19 (+7d) |  | -147.5d → -119.5d |
| 2 | **Local – 03** |  | 2027-07-05 → 2027-07-12 (+7d) |  |  |
| 8 | **Electrical Works** |  | 2027-07-05 → 2027-07-12 (+7d) |  |  |
| 2 | **Medium Voltage** |  | 2027-07-05 → 2027-07-12 (+7d) |  |  |
| CON-LEG101-LR-6920 | Excavation for Medium Voltage trench [Local – 03 ] | 2027-06-13 → 2027-06-20 (+7d) | 2027-06-15 → 2027-06-22 (+7d) |  | -147.5d → -119.5d |
| CON-LEG101-LR-7100 | Installation of Medium Voltage Cables [Local – 03 ] | 2027-06-16 → 2027-06-23 (+7d) | 2027-06-21 → 2027-06-28 (+7d) |  | -78.5d → -55.85d |
| CON-LEG101-LR-7190 | Installation of Straight joints cables [Local – 03 ] | 2027-06-22 → 2027-06-29 (+7d) | 2027-06-23 → 2027-06-30 (+7d) |  | -78.5d → -55.85d |
| CON-LEG101-LR-7280 | Installation of Cable Termination for 13.8 kv 3Cx 500 mm², Al /XLPE/LLDPE [Local – 03 ] | 2027-06-24 → 2027-07-01 (+7d) | 2027-06-27 → 2027-07-04 (+7d) |  | -78.5d → -55.85d |
| CON-LEG101-LR-7370 | Installation of Medium Voltage Switchgears [Local – 03 ] | 2027-06-28 → 2027-07-05 (+7d) | 2027-07-01 → 2027-07-08 (+7d) |  | -78.5d → -55.85d |
| CON-LEG101-LR-7720 | Installation of Cable Termination [Local – 03 ] | 2027-07-03 → 2027-07-10 (+7d) | 2027-07-05 → 2027-07-12 (+7d) |  | -78.5d → -55.85d |
| 3 | **Local – 04** |  | 2027-07-10 → 2027-07-17 (+7d) |  |  |
| 7 | **Road Works** |  | 2027-02-07 → 2027-02-18 (+11d) |  |  |
| 1 | **Earthworks and Site Grading** |  | 2027-01-09 → 2027-01-16 (+7d) |  |  |
| CON-LEG101-LR-1800 | Excavation for Roadway [Local – 04 ] | 2026-11-29 → 2026-12-06 (+7d) | 2026-12-15 → 2026-12-22 (+7d) |  | -44.74d → -16.74d |
| CON-LEG101-LR-4420 | Embankments to the roads [Local – 04 ] | 2026-12-16 → 2026-12-23 (+7d) | 2027-01-09 → 2027-01-16 (+7d) |  | 40.5d → 63.15d |
| 2 | **Asphalt Work** | 2027-01-10 → 2027-01-17 (+7d) | 2027-02-07 → 2027-02-18 (+11d) |  |  |
| CON-LEG101-LR-5630 | Subgrade [Local – 04 ] | 2027-01-10 → 2027-01-17 (+7d) | 2027-01-23 → 2027-01-30 (+7d) |  | 40.5d → 63.15d |
| CON-LEG101-LR-5730 | Aggregate base course [Local – 04 ] | 2027-01-25 → 2027-02-01 (+7d) | 2027-02-02 → 2027-02-14 (+12d) |  | 39.5d → 62.15d |
| CON-LEG101-LR-5830 | Prime Coat (MC1) [Local – 04 ] | 2027-02-03 → 2027-02-15 (+12d) | 2027-02-04 → 2027-02-16 (+12d) |  | 39.5d → 62.15d |
| CON-LEG101-LR-5930 | Bituminous Base Course [Local – 04 ] | 2027-02-06 → 2027-02-17 (+11d) | 2027-02-07 → 2027-02-18 (+11d) |  | 39.5d → 62.15d |
| 1 | **Electric Works** | 2027-06-13 → 2027-06-20 (+7d) | 2027-07-10 → 2027-07-17 (+7d) |  |  |
| 2 | **Medium Voltage** | 2027-06-13 → 2027-06-20 (+7d) | 2027-07-10 → 2027-07-17 (+7d) |  |  |
| CON-LEG101-LR-6930 | Excavation for Medium Voltage trench [Local – 04 ] | 2027-06-13 → 2027-06-20 (+7d) | 2027-06-16 → 2027-06-23 (+7d) |  | -147.5d → -119.5d |
| CON-LEG101-LR-7020 | Installation of Medium Voltage Cables Duct Banks [Local – 04 ] | 2027-06-17 → 2027-06-24 (+7d) | 2027-06-20 → 2027-06-27 (+7d) |  | -82.5d → -59.85d |
| CON-LEG101-LR-7110 | Installation of Medium Voltage Cables [Local – 04 ] | 2027-06-21 → 2027-06-28 (+7d) | 2027-06-27 → 2027-07-04 (+7d) |  | -82.5d → -59.85d |

| ID | Task | Start | Finish | Total float |
| --- | --- | --- | --- | --- |
| CON-LEG101-LR-7200 | Installation of Straight joints cables [Local – 04 ] | 2027-06-28 → 2027-07-05 (+7d) | 2027-06-30 → 2027-07-07 (+7d) | -82.5d → -59.85d |
| CON-LEG101-LR-7290 | Installation of Cable Termination for 13.8 kv 3Cx 500 mm², Al /XLPE/LLDPE [Local – 04 ] | 2027-07-01 → 2027-07-08 (+7d) | 2027-07-04 → 2027-07-11 (+7d) | -82.5d → -59.85d |
| CON-LEG101-LR-7380 | Installation of Medium Voltage Switchgears [Local – 04 ] | 2027-07-05 → 2027-07-12 (+7d) | 2027-07-06 → 2027-07-13 (+7d) | -82.5d → -59.85d |
| CON-LEG101-LR-7730 | Installation of Cable Termination [Local – 04 ] | 2027-07-07 → 2027-07-14 (+7d) | 2027-07-10 → 2027-07-17 (+7d) | -82.5d → -59.85d |
| 5 | **Local – 05** |  | 2027-07-04 → 2027-07-11 (+7d) |  |
| 8 | **Electrical Works** |  | 2027-07-04 → 2027-07-11 (+7d) |  |
| 2 | **Medium Voltage** |  | 2027-07-04 → 2027-07-11 (+7d) |  |
| CON-LEG101-LR-6940 | Excavation for Medium Voltage trench [Local – 05 ] | 2027-06-17 → 2027-06-24 (+7d) | 2027-06-21 → 2027-06-28 (+7d) | -77.5d → -54.85d |
| CON-LEG101-LR-7120 | Installation of Medium Voltage Cables [Local – 05 ] | 2027-06-22 → 2027-06-29 (+7d) | 2027-06-26 → 2027-07-03 (+7d) | -77.5d → -54.85d |
| CON-LEG101-LR-7210 | Installation of Straight joints cables [Local – 05 ] | 2027-06-27 → 2027-07-04 (+7d) | 2027-06-28 → 2027-07-05 (+7d) | -77.5d → -54.85d |
| CON-LEG101-LR-7300 | Installation of Cable Termination for 13.8 kv 3Cx 500 mm², Al /XLPE/LLDPE [Local – 05 ] | 2027-06-29 → 2027-07-06 (+7d) | 2027-06-30 → 2027-07-07 (+7d) | -77.5d → -54.85d |
| CON-LEG101-LR-7390 | Installation of Medium Voltage Switchgears [Local – 05 ] | 2027-07-01 → 2027-07-08 (+7d) | 2027-07-03 → 2027-07-10 (+7d) | -77.5d → -54.85d |
| CON-LEG101-LR-7740 | Installation of Cable Termination [Local – 05 ] | 2027-07-01 → 2027-07-08 (+7d) | 2027-07-04 → 2027-07-11 (+7d) | -77.5d → -54.85d |
| 6 | **Local – 06** |  | 2027-07-03 → 2027-07-10 (+7d) |  |
| 8 | **Electrical Works** |  | 2027-07-03 → 2027-07-10 (+7d) |  |
| 2 | **Medium Voltage** |  | 2027-07-03 → 2027-07-10 (+7d) |  |
| CON-LEG101-LR-6950 | Excavation for Medium Voltage trench [Local – 06 ] | 2027-06-19 → 2027-06-26 (+7d) | 2027-06-21 → 2027-06-28 (+7d) | -76.5d → -53.85d |
| CON-LEG101-LR-7130 | Installation of Medium Voltage Cables [Local – 06 ] | 2027-06-22 → 2027-06-29 (+7d) | 2027-06-24 → 2027-07-01 (+7d) | -76.5d → -53.85d |
| CON-LEG101-LR-7220 | Installation of Straight joints cables [Local – 06 ] | 2027-06-26 → 2027-07-03 (+7d) | 2027-06-27 → 2027-07-04 (+7d) | -76.5d → -53.85d |
| CON-LEG101-LR-7310 | Installation of Cable Termination for 13.8 kv 3Cx 500 mm², Al /XLPE/LLDPE [Local – 06 ] | 2027-06-28 → 2027-07-05 (+7d) | 2027-06-29 → 2027-07-06 (+7d) | -76.5d → -53.85d |
| CON-LEG101-LR-7400 | Installation of Medium Voltage Switchgears [Local – 06 ] | 2027-06-30 → 2027-07-07 (+7d) | 2027-07-01 → 2027-07-08 (+7d) | -76.5d → -53.85d |
| CON-LEG101-LR-7750 | Installation of Cable Termination [Local – 06 ] | 2027-06-30 → 2027-07-07 (+7d) | 2027-07-03 → 2027-07-10 (+7d) | -76.5d → -53.85d |
| 7 | **Local – 07** |  | 2027-07-01 → 2027-07-08 (+7d) |  |
| 7 | **Road Works** |  | 2026-12-16 → 2026-12-23 (+7d) |  |
| 1 | **Earthworks and Site Grading** |  | 2026-12-16 → 2026-12-23 (+7d) |  |
| CON-LEG101-LR-5070 | Embankments to the parcels for roads [Local – 07 ] |  | 2026-12-16 → 2026-12-23 (+7d) | 85.22d → 107.87d |
| 8 | **Electrical Works** |  | 2027-07-01 → 2027-07-08 (+7d) |  |
| 2 | **Medium Voltage** |  | 2027-07-01 → 2027-07-08 (+7d) |  |
| CON-LEG101-LR-6960 | Excavation for Medium Voltage trench [Local – 07 ] | 2027-06-19 → 2027-06-26 (+7d) | 2027-06-21 → 2027-06-28 (+7d) | -75.5d → -52.85d |
| CON-LEG101-LR-7140 | Installation of Medium Voltage Cables [Local – 07 ] | 2027-06-22 → 2027-06-29 (+7d) | 2027-06-24 → 2027-07-01 (+7d) | -75.5d → -52.85d |
| CON-LEG101-LR-7230 | Installation of Straight joints cables [Local – 07 ] | 2027-06-26 → 2027-07-03 (+7d) | 2027-06-27 → 2027-07-04 (+7d) | -75.5d → -52.85d |
| CON-LEG101-LR-7320 | Installation of Cable Termination for 13.8 kv 3Cx 500 mm², Al /XLPE/LLDPE [Local – 07 ] | 2027-06-28 → 2027-07-05 (+7d) | 2027-06-29 → 2027-07-06 (+7d) | -75.5d → -52.85d |
| CON-LEG101-LR-7410 | Installation of Medium Voltage Switchgears [Local – 07 ] | 2027-06-30 → 2027-07-07 (+7d) | 2027-07-01 → 2027-07-08 (+7d) | -75.5d → -52.85d |
| CON-LEG101-LR-7760 | Installation of Cable Termination [Local – 07 ] | 2027-06-30 → 2027-07-07 (+7d) | 2027-07-01 → 2027-07-08 (+7d) | -75.5d → -52.85d |
| 6 | **Deep Infrastructure network** |  | 2027-02-08 → 2027-02-20 (+12d) |  |
| 1 | **Local – 01** |  | 2026-12-01 → 2026-12-08 (+7d) |  |
| 1 | **LOCAL - 01 Segment-01 (From 0+000 to 1+066)** |  | 2026-11-30 → 2026-12-07 (+7d) |  |
| 1 | **Stormwater Utilities** |  | 2026-11-30 → 2026-12-07 (+7d) |  |
| 1 | **Manhole** |  | 2026-11-29 → 2026-12-06 (+7d) |  |
| CON-LEG101-LR-10920 | Finishing and Testing of Inlet Manholes [Local – 01 Segment-01] |  | 2026-11-29 → 2026-12-06 (+7d) | 99.75d → 122.4d |
| 3 | **Concrete Chambers/Outfalls** |  | 2026-11-30 → 2026-12-07 (+7d) |  |
| CON-LEG101-LR-10880 | FInishing and Testing of Concrete chambers [Local – 01 Segment-01] |  | 2026-11-30 → 2026-12-07 (+7d) | 112.6d → 130.9d |
| 4 | **Sanitary Sewerage** |  | 2026-11-29 → 2026-12-06 (+7d) |  |
| 1 | **Manhole** |  | 2026-11-29 → 2026-12-06 (+7d) |  |
| CON-LEG101-LR-3500 | Installation of Fiberglass Manholes [Local – 01 Segment-01] |  | 2026-11-29 → 2026-12-06 (+7d) | 48.5d → 71.15d |
| 2 | **LOCAL - 01 Segment-02 (From 1+066 to 2+133)** |  | 2026-11-30 → 2026-12-07 (+7d) |  |
| 1 | **Stormwater Utilities** |  | 2026-11-30 → 2026-12-07 (+7d) |  |
| 3 | **Concrete Chambers/Outfalls** |  | 2026-11-30 → 2026-12-07 (+7d) |  |
| CON-LEG101-LR-11030 | FInishing and Testing of Concrete chambers [Local – 01 Segment-02] |  | 2026-11-30 → 2026-12-07 (+7d) | 112.6d → 130.9d |
| 4 | **Sanitary Sewerage** |  | 2026-11-29 → 2026-12-06 (+7d) |  |
| 1 | **Manhole** |  | 2026-11-29 → 2026-12-06 (+7d) |  |
| CON-LEG101-LR-3510 | Installation of Fiberglass Manholes [Local – 01 Segment-02] |  | 2026-11-29 → 2026-12-06 (+7d) | 50.08d → 72.73d |
| 3 | **LOCAL - 01 Segment-03 (From 2+133 to 3+200)** |  | 2026-12-01 → 2026-12-08 (+7d) |  |
| 1 | **Stormwater Utilities** |  | 2026-12-01 → 2026-12-08 (+7d) |  |
| 1 | **Manhole** |  | 2026-11-29 → 2026-12-06 (+7d) |  |
| CON-LEG101-LR-11070 | Finishing and Testing of Inlet Manholes [Local – 01 Segment-03] |  | 2026-11-29 → 2026-12-06 (+7d) | 77.2d → 99.85d |
| 3 | **Concrete Chambers/Outfalls** |  | 2026-12-01 → 2026-12-08 (+7d) |  |
| CON-LEG101-LR-11130 | FInishing and Testing of Concrete chambers [Local – 01 Segment-03] |  | 2026-12-01 → 2026-12-08 (+7d) | 112.6d → 130.9d |
| 4 | **Sanitary Sewerage** |  | 2026-11-29 → 2026-12-06 (+7d) |  |
| 1 | **Manhole** |  | 2026-11-29 → 2026-12-06 (+7d) |  |
| CON-LEG101-LR-3520 | Installation of Fiberglass Manholes [Local – 01 Segment-03] |  | 2026-11-29 → 2026-12-06 (+7d) | 76.5d → 99.15d |
| 2 | **Local – 02** |  | 2026-12-01 → 2026-12-08 (+7d) |  |
| 1 | **Stormwater Utilities** |  | 2026-12-01 → 2026-12-08 (+7d) |  |
| 1 | **Manhole** |  | 2026-11-29 → 2026-12-06 (+7d) |  |
| CON-LEG101-LR-11180 | Finishing and Testing of Inlet Manholes [Local – 02 ] |  | 2026-11-29 → 2026-12-06 (+7d) | 99.7d → 122.35d |
| 3 | **Concrete Chambers/Outfalls** |  | 2026-12-01 → 2026-12-08 (+7d) |  |
| CON-LEG101-LR-11230 | FInishing and Testing of Concrete chambers [Local – 02 ] |  | 2026-12-01 → 2026-12-08 (+7d) | 112.6d → 130.9d |
| 4 | **Sanitary Sewerage** |  | 2026-11-29 → 2026-12-06 (+7d) |  |
| 1 | **Manhole** |  | 2026-11-29 → 2026-12-06 (+7d) |  |
| CON-LEG101-LR-3530 | Installation of Fiberglass Manholes [Local – 02 ] |  | 2026-11-29 → 2026-12-06 (+7d) | -30.74d → -2.74d |

| ID | Task | Start | Finish | Complete | Total float |
| --- | --- | --- | --- | --- | --- |
| 3 | **Local – 03** |  | 2026-12-02 → 2026-12-09 (+7d) |  |  |
| 1 | **Stormwater Utilities** |  | 2026-12-02 → 2026-12-09 (+7d) |  |  |
| 1 | **Manhole** |  | 2026-12-01 → 2026-12-08 (+7d) |  |  |
| CON-LEG101-LR-11280 | Finishing and Testing of Inlet Manholes [Local – 03 ] |  | 2026-12-01 → 2026-12-08 (+7d) |  | 110.4d → 128.7d |
| 3 | **Concrete Chambers/Outfalls** |  | 2026-12-02 → 2026-12-09 (+7d) |  |  |
| CON-LEG101-LR-11340 | FInishing and Testing of Concrete chambers [Local – 03 ] |  | 2026-12-02 → 2026-12-09 (+7d) |  | 112.6d → 130.9d |
| 4 | **Local – 04** |  | 2027-02-07 → 2027-02-18 (+11d) |  |  |
| 1 | **Stormwater Utilities** |  | 2027-02-07 → 2027-02-18 (+11d) |  |  |
| 2 | **Pipe Work** |  | 2027-01-05 → 2027-01-12 (+7d) |  |  |
| CON-LEG101-LR-3930 | Testing for Stormwater Utilities Network [Local – 04 ] | 2026-12-16 → 2026-12-23 (+7d) | 2026-12-29 → 2027-01-05 (+7d) |  | -44.74d → -16.74d |
| CON-LEG101-LR-4140 | Installation of Micron Marker Magnetic Tape [Local – 04 ] | 2026-12-30 → 2027-01-06 (+7d) | 2026-12-31 → 2027-01-07 (+7d) |  | -44.74d → -16.74d |
| CON-LEG101-LR-4250 | Backfilling to Subgrade Elevation [Local – 04 ] | 2027-01-02 → 2027-01-09 (+7d) | 2027-01-05 → 2027-01-12 (+7d) |  | -44.74d → -16.74d |
| 1 | **Manhole** |  | 2027-01-13 → 2027-01-20 (+7d) |  |  |
| CON-LEG101-LR-4370 | Installation of Inlet Manholes [Local – 04 ] |  | 2026-12-20 → 2026-12-27 (+7d) |  | -36.74d → -8.74d |
| CON-LEG101-LR-11380 | Backfilling of Inlet Manholes [Local – 04 ] | 2026-12-21 → 2026-12-28 (+7d) | 2026-12-27 → 2027-01-03 (+7d) |  | -36.74d → -8.74d |
| CON-LEG101-LR-11390 | Finishing and Testing of Inlet Manholes [Local – 04 ] | 2026-12-28 → 2027-01-04 (+7d) | 2027-01-13 → 2027-01-20 (+7d) |  | 88.2d → 106.5d |
| 3 | **Concrete Chambers/Outfalls** | 2026-12-21 → 2026-12-28 (+7d) | 2027-02-07 → 2027-02-18 (+11d) |  |  |
| CON-LEG101-LR-11400 | Excavation of Concrete chambers [Local – 04 ] | 2026-12-21 → 2026-12-28 (+7d) | 2026-12-27 → 2027-01-03 (+7d) |  | 39.5d → 62.15d |
| CON-LEG101-LR-11410 | PC of Concrete chambers [Local – 04 ] | 2026-12-28 → 2027-01-04 (+7d) | 2026-12-29 → 2027-01-05 (+7d) |  | 39.5d → 62.15d |
| CON-LEG101-LR-4470 | Installation of Concrete chambers [Local – 04 ] | 2026-12-30 → 2027-01-06 (+7d) | 2027-01-10 → 2027-01-17 (+7d) |  | 39.5d → 62.15d |
| CON-LEG101-LR-11420 | Installation UPVC Pipes to Concrete chambers [Local – 04 ] | 2027-01-11 → 2027-01-18 (+7d) | 2027-01-17 → 2027-01-24 (+7d) |  | 39.5d → 62.15d |
| CON-LEG101-LR-11430 | Backfilling to Concrete chambers [Local – 04 ] | 2027-01-18 → 2027-01-25 (+7d) | 2027-01-24 → 2027-01-31 (+7d) |  | 39.5d → 62.15d |
| CON-LEG101-LR-11440 | FInishing and Testing of Concrete chambers [Local – 04 ] | 2027-01-25 → 2027-02-01 (+7d) | 2027-02-07 → 2027-02-18 (+11d) |  | 67.15d → 85.45d |
| 4 | **Sanitary Sewerage** |  | 2026-12-28 → 2027-01-04 (+7d) |  |  |
| 2 | **Pipe Work** |  | 2026-12-28 → 2027-01-04 (+7d) |  |  |
| CON-LEG101-LR-3180 | Concrete encasement, pipe dia 200 and 350 mm [Local – 04 ] | 2026-12-16 → 2026-12-23 (+7d) | 2026-12-19 → 2026-12-26 (+7d) |  | -37.74d → -9.74d |
| CON-LEG101-LR-3360 | Installation of Micron Marker Magnetic Tape [Local – 04 ] | 2026-12-20 → 2026-12-27 (+7d) | 2026-12-21 → 2026-12-28 (+7d) |  | -37.74d → -9.74d |
| CON-LEG101-LR-3450 | Backfilling to Subgrade Elevation [Local – 04 ] | 2026-12-22 → 2026-12-29 (+7d) | 2026-12-28 → 2027-01-04 (+7d) |  | -37.74d → -9.74d |
| 1 | **Manhole** |  | 2026-12-19 → 2026-12-26 (+7d) |  |  |
| CON-LEG101-LR-3540 | Installation of Fiberglass Manholes [Local – 04 ] |  | 2026-12-19 → 2026-12-26 (+7d) |  | -29.74d → -1.74d |
| 5 | **Local – 05** |  | 2026-12-16 → 2026-12-23 (+7d) |  |  |
| 4 | **Sanitary Sewerage** |  | 2026-12-16 → 2026-12-23 (+7d) |  |  |
| 1 | **Manhole** |  | 2026-12-16 → 2026-12-23 (+7d) |  |  |
| CON-LEG101-LR-3550 | Installation of Fiberglass Manholes [Local – 05 ] |  | 2026-12-16 → 2026-12-23 (+7d) |  | 69.6d → 92.25d |
| 8 | **Local – 08** |  | 2027-02-08 → 2027-02-20 (+12d) |  |  |
| 1 | **Stormwater Utilities** |  | 2027-02-08 → 2027-02-20 (+12d) |  |  |
| 1 | **Manhole** |  | 2027-01-14 → 2027-01-21 (+7d) |  |  |
| CON-LEG101-LR-11750 | Finishing and Testing of Inlet Manholes [Local – 08 ] |  | 2027-01-14 → 2027-01-21 (+7d) |  | 88.2d → 106.5d |
| 3 | **Concrete Chambers/Outfalls** |  | 2027-02-08 → 2027-02-20 (+12d) |  |  |
| CON-LEG101-LR-11800 | FInishing and Testing of Concrete chambers [Local – 08 ] |  | 2027-02-08 → 2027-02-20 (+12d) |  | 67.15d → 85.45d |
| 7 | **Shallow infrastructure network** |  | 2027-10-24 → 2027-10-31 (+7d) |  |  |
| 1 | **Local – 01** |  | 2027-08-12 → 2027-08-19 (+7d) |  |  |
| 1 | **LOCAL - 01 Segment-01 (From 0+000 to 1+066)** |  | 2027-08-07 → 2027-08-14 (+7d) |  |  |
| 1 | **Electrical Works** |  | 2027-07-13 → 2027-07-20 (+7d) |  |  |
| 3 | **Low Voltage** |  | 2027-07-13 → 2027-07-20 (+7d) |  |  |
| CON-LEG101-LR-8760 | Installation of Earthing System [Local – 01 Segment-01] |  | 2027-07-13 → 2027-07-20 (+7d) |  | 35.5d → 29.5d |
| 10 | **Telecommunications** |  | 2027-07-26 → 2027-07-31 (+5d) |  |  |
| CON-LEG101-LR-9330 | Installation of Reinforced concrete manhole [Local – 01 Segment-01] |  | 2027-07-26 → 2026-11-12 A (-256d) | 90% → 100% | 23.75d → none |
| CON-LEG101-LR-9030 | Installation of Sand encased duct banks for secondary network [Local – 01 Segment-01] |  | 2027-07-14 → 2027-07-21 (+7d) |  | 23.75d → 19.85d |
| CON-LEG101-LR-9130 | Installation of Sand and soil encased duct banks, for combined network of primary and secondary [Local – 01 Segment-01 |  | 2027-07-19 → 2027-07-26 (+7d) |  | 23.75d → 19.85d |
| CON-LEG101-LR-9230 | Installation of Concrete encased duct banks for for combined network of primary and secondary [Local – 01 Segment-01] |  | 2027-07-24 → 2027-07-31 (+7d) |  | 23.75d → 19.85d |
| 11 | **CCTV feeding system and GSM** |  | 2027-07-17 → 2027-07-24 (+7d) |  |  |
| CON-LEG101-LR-9780 | Installation of Security workstation with 1 x 19" LED screen [Local – 01 Segment-01] | 2027-07-11 → 2027-07-18 (+7d) | 2027-07-11 → 2027-07-18 (+7d) |  | 29.6d → 23.6d |
| CON-LEG101-LR-9790 | Installation of LED Screen 43" (24/7 operation) with Ethernet decoders [Local – 01 Segment-01] | 2027-07-12 → 2027-07-19 (+7d) | 2027-07-13 → 2027-07-20 (+7d) |  | 29.6d → 23.6d |
| CON-LEG101-LR-9830 | Installation of Network Video Recorder 4k 64 Channel [Local – 01 Segment-01] | 2027-07-14 → 2027-07-21 (+7d) | 2027-07-14 → 2027-07-21 (+7d) |  | 29.6d → 23.6d |
| CON-LEG101-LR-9840 | Installation of Keypad [Local – 01 Segment-01] | 2027-07-15 → 2027-07-22 (+7d) | 2027-07-17 → 2027-07-24 (+7d) |  | 29.6d → 23.6d |
| 12 | **Earthing System** | 2027-07-18 → 2027-07-25 (+7d) | 2027-07-19 → 2027-07-26 (+7d) |  |  |
| CON-LEG101-LR-8280 | Installation of Earthing for Distribution panels,SL feeder pillars, KWH, Unit substations and RMU [Local – 01 Segment-01 | 2027-07-18 → 2027-07-25 (+7d) | 2027-07-19 → 2027-07-26 (+7d) |  | 29.6d → 23.6d |
| 9 | **Road Lighting** |  | 2027-08-07 → 2027-08-14 (+7d) |  |  |
| CON-LEG101-LR-7420 | Installation of Unit Substation Including concrete foundations and fencing [Local – 01 Segment-01] |  | 2027-07-17 → 2027-07-24 (+7d) |  | -78.15d → -59.85d |
| CON-LEG101-LR-8330 | Installation of Earthing for Streetlighting feeders for every end pole circuits. [Local – 01 Segment-01] |  | 2027-08-07 → 2027-08-14 (+7d) |  | -78.15d → -59.85d |
| CON-LEG101-LR-7500 | Installation of Ring Main Unit RMU [Local – 01 Segment-01] | 2027-07-17 → 2027-07-24 (+7d) | 2027-08-03 → 2027-08-10 (+7d) |  | -78.15d → -59.85d |
| 2 | **LOCAL - 01 Segment-02 (From 1+066 to 2+133)** |  | 2027-08-12 → 2027-08-19 (+7d) |  |  |
| 1 | **Electrical Works** |  | 2027-08-08 → 2027-08-15 (+7d) |  |  |
| 3 | **Low Voltage** |  | 2027-08-08 → 2027-08-15 (+7d) |  |  |
| CON-LEG101-LR-8770 | Installation of Earthing System [Local – 01 Segment-02] |  | 2027-08-08 → 2027-08-15 (+7d) |  | 13.35d → 7.35d |
| 12 | **Earthing System** |  | 2027-08-12 → 2027-08-19 (+7d) |  |  |
| CON-LEG101-LR-8290 | Installation of Earthing for Distribution panels,SL feeder pillars, KWH, Unit substations and RMU [Local – 01 Segment-02 |  | 2027-08-12 → 2027-08-19 (+7d) |  | -78.15d → -59.85d |
| 9 | **Road Lighting** |  | 2027-07-12 → 2027-07-19 (+7d) |  |  |
| CON-LEG101-LR-8340 | Installation of Earthing for Streetlighting feeders for every end pole circuits. [Local – 01 Segment-02] |  | 2027-07-12 → 2027-07-19 (+7d) |  | -82.5d → -54.5d |

| ID | Task | Start | Finish | Complete | Total float |
| --- | --- | --- | --- | --- | --- |
| 3 | **LOCAL - 01 Segment-03 (From 2+133 to 3+200)** |  | 2027-07-17 → 2027-07-24 (+7d) |  |  |
| 5 | **TSE Network** |  | 2026-12-01 → 2026-12-08 (+7d) |  |  |
| 1 | **Valves/Chamber** |  | 2026-12-01 → 2026-12-08 (+7d) |  |  |
| CON-LEG101-LR-15040 | Installation of Air Valve chambers [Local – 01 Segment-03] |  | 2026-12-01 → 2026-12-08 (+7d) |  | 110.25d → 138.25d |
| CON-LEG101-LR-2630 | Installation of Wash out chambers [Local – 01 Segment-03] |  | 2026-11-30 → 2026-12-07 (+7d) |  | 110.25d → 138.25d |
| 6 | **Public Water Utility Distribution** |  | 2026-12-01 → 2026-12-08 (+7d) |  |  |
| 1 | **Valves/Chamber** |  | 2026-12-01 → 2026-12-08 (+7d) |  |  |
| CON-LEG101-LR-1270 | Installation of Air Valve chambers [Local – 01 Segment-03] |  | 2026-12-01 → 2026-12-08 (+7d) |  | 148.4d → 149.2d |
| CON-LEG101-LR-1230 | Installation of Wash out chambers [Local – 01 Segment-03] |  | 2026-11-30 → 2026-12-07 (+7d) |  | 148.4d → 149.2d |
| 12 | **Earthing System** | 2027-07-04 → 2027-07-11 (+7d) | 2027-07-12 → 2027-07-19 (+7d) |  |  |
| CON-LEG101-LR-8300 | Installation of Earthing for Distribution panels,SL feeder pillars, KWH, Unit substations and RMU [Local – 01 Segment-03 | 2027-07-04 → 2027-07-11 (+7d) | 2027-07-12 → 2027-07-19 (+7d) |  | -25.6d → -24.8d |
| 9 | **Road Lighting** |  | 2027-07-17 → 2027-07-24 (+7d) |  |  |
| CON-LEG101-LR-8350 | Installation of Earthing for Streetlighting feeders for every end pole circuits. [Local – 01 Segment-03] |  | 2027-07-17 → 2027-07-24 (+7d) |  | -82.5d → -54.5d |
| 2 | **Local – 02** |  | 2027-07-25 → 2027-08-01 (+7d) |  |  |
| 5 | **TSE Network** |  | 2026-12-01 → 2026-12-08 (+7d) |  |  |
| 1 | **Valves/Chamber** |  | 2026-12-01 → 2026-12-08 (+7d) |  |  |
| CON-LEG101-LR-2410 | Installation of Wash out Valves [Local – 02 ] |  | 2026-12-01 → 2026-12-08 (+7d) |  | 52.6d → 80.6d |
| CON-LEG101-LR-2710 | Installation of Wash out chambers [Local – 02 ] |  | 2026-12-01 → 2026-12-08 (+7d) |  | 52.6d → 80.6d |
| 6 | **Public Water Utility Distribution** |  | 2026-12-02 → 2026-12-09 (+7d) |  |  |
| 1 | **Valves/Chamber** |  | 2026-12-02 → 2026-12-09 (+7d) |  |  |
| CON-LEG101-LR-15080 | Installation of Air Valve chambers [Local – 02 ] |  | 2026-12-01 → 2026-12-08 (+7d) |  | 79.15d → 107.15d |
| CON-LEG101-LR-1030 | Installation of Gate (Sluice) valves (Direct buried) [Local – 02 ] |  | 2026-12-02 → 2026-12-09 (+7d) |  | 79.15d → 107.15d |
| CON-LEG101-LR-15070 | Installation of Wash out chambers [Local – 02 ] |  | 2026-11-30 → 2026-12-07 (+7d) |  | 53.4d → 81.4d |
| 1 | **Electrical Works** |  | 2027-07-25 → 2027-08-01 (+7d) |  |  |
| 3 | **Low Voltage** |  | 2027-07-25 → 2027-08-01 (+7d) |  |  |
| CON-LEG101-LR-8490 | Installation of Low Voltage Distribution Panel [Local – 02 ] | 2027-07-04 → 2027-07-11 (+7d) | 2027-07-14 → 2027-07-21 (+7d) |  | -80.5d → -52.5d |
| CON-LEG101-LR-8540 | Installation of KWH Meters Walls [Local – 02 ] | 2027-07-15 → 2027-07-22 (+7d) | 2027-07-22 → 2027-07-29 (+7d) |  | 24.6d → 18.6d |
| CON-LEG101-LR-8790 | Installation of Earthing System [Local – 02 ] | 2027-07-24 → 2027-07-31 (+7d) | 2027-07-25 → 2027-08-01 (+7d) |  | 24.6d → 18.6d |
| 11 | **CCTV feeding system and GSM** |  | 2027-07-11 → 2027-07-18 (+7d) |  |  |
| CON-LEG101-LR-9800 | Installation of LED Screen 43" (24/7 operation) with Ethernet decoders [Local – 02 ] | 2027-07-04 → 2027-07-11 (+7d) | 2027-07-11 → 2027-07-18 (+7d) |  | -77.5d → -49.5d |
| 12 | **Earthing System** | 2027-07-19 → 2027-07-26 (+7d) | 2027-07-25 → 2027-08-01 (+7d) |  |  |
| CON-LEG101-LR-8310 | Installation of Earthing for Distribution panels,SL feeder pillars, KWH, Unit substations and RMU [Local – 02 ] | 2027-07-19 → 2027-07-26 (+7d) | 2027-07-25 → 2027-08-01 (+7d) |  | -83.5d → -55.5d |
| 9 | **Road Lighting** |  | 2027-07-21 → 2027-07-28 (+7d) |  |  |
| CON-LEG101-LR-8360 | Installation of Earthing for Streetlighting feeders for every end pole circuits. [Local – 02 ] |  | 2027-07-21 → 2027-07-28 (+7d) |  | -83.5d → -55.5d |
| CON-LEG101-LR-7430 | Installation of Unit Substation Including concrete foundations and fencing [Local – 02 ] | 2027-06-05 → 2027-06-12 (+7d) | 2027-06-12 → 2027-06-19 (+7d) |  | -65.5d → -37.5d |
| CON-LEG101-LR-7510 | Installation of Ring Main Unit RMU [Local – 02 ] | 2027-07-04 → 2027-07-11 (+7d) | 2027-07-18 → 2027-07-25 (+7d) |  | -83.5d → -55.5d |
| 5 | **TSE Network** |  | 2026-12-03 → 2026-12-10 (+7d) |  |  |
| 1 | **Valves/Chamber** |  | 2026-12-03 → 2026-12-10 (+7d) |  |  |
| CON-LEG101-LR-2720 | Installation of Air Valve chambers [Local – 03 ] |  | 2026-12-03 → 2026-12-10 (+7d) |  | 52.6d → 80.6d |
| CON-LEG101-LR-2640 | Installation of Wash out chambers [Local – 03 ] |  | 2026-12-02 → 2026-12-09 (+7d) |  | 52.6d → 80.6d |
| 6 | **Public Water Utility Distribution** |  | 2026-12-05 → 2026-12-12 (+7d) |  |  |
| 1 | **Valves/Chamber** |  | 2026-12-05 → 2026-12-12 (+7d) |  |  |
| CON-LEG101-LR-15110 | Installation of Air Valve chambers [Local – 03 ] |  | 2026-12-05 → 2026-12-12 (+7d) |  | 52.6d → 80.6d |
| 1 | **Electrical Works** |  | 2027-06-28 → 2027-06-26 (-2d) |  |  |
| 3 | **Low Voltage** |  | 2027-06-28 → 2027-06-26 (-2d) |  |  |
| CON-LEG101-LR-7820 | Excavation works for Low Voltage Cables [Local – 03 ] |  | 2027-06-20 → 2026-11-14 A (-218d) | 70% → 100% | -73d → none |
| CON-LEG101-LR-7920 | Installation of Low Voltage Cables [Local – 03 ] |  | 2027-06-24 → 2026-11-15 A (-221d) | 70% → 100% | -72.8d → none |
| CON-LEG101-LR-8800 | Installation of Earthing System [Local – 03 ] | 2027-06-24 → 2027-06-23 (-1d) | 2027-06-28 → 2027-06-26 (-2d) |  | -72.8d → -33.2d |
| 10 | **Telecommunications** |  | 2027-07-13 → 2027-07-08 (-5d) |  |  |
| CON-LEG101-LR-8870 | Installation of Sand and soil encased duct banks for primary network [Local – 03 ] |  | 2027-06-28 → 2027-06-29 (+1d) | 60% → 70% | -73d → -35.3d |
| CON-LEG101-LR-9070 | Installation of Sand encased duct banks for secondary network [Local – 03 ] |  |  | 60% → 70% | -73d → -35.3d |
| CON-LEG101-LR-9170 | Installation of Sand and soil encased duct banks, for combined network of primary and secondary [Local – 03 ] |  | 2027-07-08 → 2027-07-07 (-1d) | 60% → 70% | -73d → -35.3d |
| CON-LEG101-LR-9270 | Installation of Concrete encased duct banks for for combined network of primary and secondary [Local – 03 ] |  | 2027-07-13 → 2027-07-08 (-5d) | 30% → 70% | -73d → -35.3d |
| CON-LEG101-LR-8120 | Installation of Lighting poles [Local – 03 ] |  | 2027-06-22 → 2026-11-12 A (-222d) | 90% → 100% | -72.6d → none |
| CON-LEG101-LR-8220 | Installation of Street Lighting Luminaire [Local – 03 ] |  | 2027-06-22 → 2026-11-12 A (-222d) | 90% → 100% | 8.8d → none |
| 4 | **Local – 04** |  | 2027-10-24 → 2027-10-31 (+7d) |  |  |
| 5 | **TSE Network** |  | 2027-05-23 → 2027-05-30 (+7d) |  |  |
| 2 | **Pipe Work** |  | 2027-02-07 → 2027-02-18 (+11d) |  |  |
| CON-LEG101-LR-1350 | Excavation for TSE Network [Local – 04 ] |  | 2027-01-07 → 2027-01-14 (+7d) |  | -44.74d → -16.74d |
| CON-LEG101-LR-1470 | Granular bedding for TSE Network [Local – 04 ] |  | 2027-01-09 → 2027-01-16 (+7d) |  | -44.74d → -16.74d |
| CON-LEG101-LR-1580 | Installation of Pipe for TSE Network [Local – 04 ] |  | 2027-01-16 → 2027-01-23 (+7d) |  | -44.74d → -16.74d |
| CON-LEG101-LR-1910 | Granular Surround for TSE Network [Local – 04 ] |  | 2027-01-30 → 2027-02-06 (+7d) |  | -44.74d → -16.74d |
| CON-LEG101-LR-2020 | Installation of Micron Marker Magnetic Tape [Local – 04 ] |  | 2027-01-31 → 2027-02-07 (+7d) |  | -44.74d → -16.74d |
| CON-LEG101-LR-2130 | Backfilling to Subgrade Elevation [Local – 04 ] |  | 2027-02-07 → 2027-02-18 (+11d) |  | -44.74d → -16.74d |
| CON-LEG101-LR-1690 | Testing for TSE Network [Local – 04 ] | 2027-01-16 → 2027-01-23 (+7d) | 2027-01-23 → 2027-01-30 (+7d) |  | -44.74d → -16.74d |
| CON-LEG101-LR-1810 | Concrete encasement, pipe dia 110 mm [Local – 04 ] | 2027-01-23 → 2027-01-30 (+7d) | 2027-01-26 → 2027-02-02 (+7d) |  | -44.74d → -16.74d |
| 1 | **Valves/Chamber** | 2027-01-31 → 2027-02-07 (+7d) | 2027-05-23 → 2027-05-30 (+7d) |  |  |
| CON-LEG101-LR-2730 | Installation of Air Valve chambers [Local – 04 ] | 2027-01-31 → 2027-02-07 (+7d) | 2027-03-02 → 2027-03-09 (+7d) |  | -28.98d → -0.98d |
| CON-LEG101-LR-15060 | Installation of Wash-out Valve chambers [Local – 04 ] | 2027-03-02 → 2027-03-09 (+7d) | 2027-03-27 → 2027-04-03 (+7d) |  | -28.98d → -0.98d |
| CON-LEG101-LR-2240 | Installation of Gate (Sluice) valves (Direct buried) [Local – 04 ] | 2027-03-02 → 2027-03-09 (+7d) | 2027-03-13 → 2027-03-20 (+7d) |  | -16.98d → 11.02d |

| ID | Task | Start | Finish | Total float |
| --- | --- | --- | --- | --- |
| CON-LEG101-LR-2350 | Installation of Wash-out Valves [Local – 04 ] | 2027-03-27 → 2027-04-03 (+7d) | 2027-04-13 → 2027-04-20 (+7d) | -28.98d → -0.98d |
| CON-LEG101-LR-2430 | Installation of Air Valves [Local – 04 ] | 2027-04-13 → 2027-04-20 (+7d) | 2027-05-01 → 2027-05-08 (+7d) | -28.98d → -0.98d |
| CON-LEG101-LR-2510 | Installation of Fire Hydrant [Local – 04 ] | 2027-05-01 → 2027-05-08 (+7d) | 2027-05-23 → 2027-05-30 (+7d) | -28.98d → -0.98d |
| 6 | **Public Water Utility Distribution** |  | 2027-05-03 → 2027-05-10 (+7d) |  |
| 2 | **Pipe Work** |  | 2027-02-07 → 2027-02-18 (+11d) |  |
| CON-LEG101-LR-10090 | Excavation for Public Water Utility Distribution Piping [Local – 04 ] |  | 2027-01-09 → 2027-01-16 (+7d) | -44.7d → -16.7d |
| CON-LEG101-LR-10190 | Granular bedding for Public Water Utility Distribution Piping [Local – 04 ] |  | 2027-01-10 → 2027-01-17 (+7d) | -44.7d → -16.7d |
| CON-LEG101-LR-10290 | Installation of Pipe for Public Water Utility Distribution Piping [Local – 04 ] |  | 2027-01-17 → 2027-01-24 (+7d) | -44.7d → -16.7d |
| CON-LEG101-LR-10590 | Granular Surround for Public Water Utility Distribution Piping [Local – 04 ] |  | 2027-01-30 → 2027-02-06 (+7d) | -44.7d → -16.7d |
| CON-LEG101-LR-10390 | Testing for Public Water Utility Distribution Piping [Local – 04 ] | 2027-01-17 → 2027-01-24 (+7d) | 2027-01-23 → 2027-01-30 (+7d) | -44.7d → -16.7d |
| CON-LEG101-LR-10490 | Concrete encasement, pipe dia 110 mm [Local – 04 ] | 2027-01-23 → 2027-01-30 (+7d) | 2027-01-26 → 2027-02-02 (+7d) | -44.7d → -16.7d |
| CON-LEG101-LR-10690 | Installation of Micron Marker Magnetic Tape [Local – 04 ] | 2027-01-30 → 2027-02-06 (+7d) | 2027-02-02 → 2027-02-14 (+12d) | -44.7d → -16.7d |
| CON-LEG101-LR-10790 | Backfilling to Subgrade Elevation [Local – 04 ] | 2027-02-02 → 2027-02-14 (+12d) | 2027-02-07 → 2027-02-18 (+11d) | -44.7d → -16.7d |
| 1 | **Valves/Chamber** | 2027-03-27 → 2027-04-03 (+7d) | 2027-05-03 → 2027-05-10 (+7d) |  |
| CON-LEG101-LR-1280 | Installation of Air Valve chambers [Local – 04 ] | 2027-03-27 → 2027-04-03 (+7d) | 2027-04-19 → 2027-04-26 (+7d) | 64.92d → 63.92d |
| CON-LEG101-LR-1050 | Installation of Gate (Sluice) valves (Direct buried) [Local – 04 ] | 2027-04-19 → 2027-04-26 (+7d) | 2027-04-26 → 2027-05-03 (+7d) | 64.92d → 63.92d |
| CON-LEG101-LR-1180 | Installation of Air Valves [Local – 04 ] | 2027-04-26 → 2027-05-03 (+7d) | 2027-05-03 → 2027-05-10 (+7d) | 64.92d → 63.92d |
| 8 | **Electrical Works** | 2027-06-17 → 2027-06-24 (+7d) | 2027-08-01 → 2027-08-08 (+7d) |  |
| 3 | **Low Voltage** | 2027-06-17 → 2027-06-24 (+7d) | 2027-08-01 → 2027-08-08 (+7d) |  |
| CON-LEG101-LR-7830 | Excavation works for Low Voltage Cables [Local – 04 ] | 2027-06-17 → 2027-06-24 (+7d) | 2027-07-01 → 2027-07-08 (+7d) | -147.5d → -119.5d |
| CON-LEG101-LR-8030 | Installation of Low Voltage Cables Duct Banks [Local – 04 ] | 2027-07-03 → 2027-07-10 (+7d) | 2027-07-13 → 2027-07-20 (+7d) | -147.5d → -119.5d |
| CON-LEG101-LR-7930 | Installation of Low Voltage Cables [Local – 04 ] | 2027-07-14 → 2027-07-21 (+7d) | 2027-07-28 → 2027-08-04 (+7d) | -86.5d → -58.5d |
| CON-LEG101-LR-8810 | Installation of Earthing System [Local – 04 ] | 2027-07-29 → 2027-08-05 (+7d) | 2027-08-01 → 2027-08-08 (+7d) | -51.4d → -57.4d |
| 10 | **Telecommunications** | 2027-07-14 → 2027-07-21 (+7d) | 2027-10-09 → 2027-10-16 (+7d) |  |
| CON-LEG101-LR-8880 | Installation of Sand and soil encased duct banks for primary network [Local – 04 ] | 2027-07-14 → 2027-07-21 (+7d) | 2027-08-02 → 2027-08-09 (+7d) | -147.5d → -119.5d |
| CON-LEG101-LR-8980 | Installation of Concrete encased duct banks for primary network [Local – 04 ] | 2027-08-03 → 2027-08-10 (+7d) | 2027-08-09 → 2027-08-16 (+7d) | -147.5d → -119.5d |
| CON-LEG101-LR-9080 | Installation of Sand encased duct banks for secondary network [Local – 04 ] | 2027-08-10 → 2027-08-17 (+7d) | 2027-08-17 → 2027-08-24 (+7d) | -147.5d → -119.5d |
| CON-LEG101-LR-9180 | Installation of Sand and soil encased duct banks, for combined network of primary and secondary [Local – 04 ] | 2027-08-18 → 2027-08-25 (+7d) | 2027-09-07 → 2027-09-14 (+7d) | -147.5d → -119.5d |
| CON-LEG101-LR-9280 | Installation of Concrete encased duct banks for for combined network of primary and secondary [Local – 04 ] | 2027-09-08 → 2027-09-15 (+7d) | 2027-09-13 → 2027-09-20 (+7d) | -147.5d → -119.5d |
| CON-LEG101-LR-9380 | Installation of Reinforced concrete manhole [Local – 04 ] | 2027-09-14 → 2027-09-21 (+7d) | 2027-10-09 → 2027-10-16 (+7d) | -147.5d → -119.5d |
| 11 | **CCTV feeding system and GSM** | 2027-08-03 → 2027-08-10 (+7d) | 2027-10-14 → 2027-10-21 (+7d) |  |
| CON-LEG101-LR-8600 | Excavation works for Low Voltage Cables for CCTV feeding system and GSM [Local – 04 ] | 2027-08-03 → 2027-08-10 (+7d) | 2027-08-16 → 2027-08-23 (+7d) | -52.4d → -58.4d |
| CON-LEG101-LR-8670 | Installation of Low Voltage Cables for CCTV feeding system and GSM [Local – 04 ] | 2027-08-17 → 2027-08-24 (+7d) | 2027-08-31 → 2027-09-07 (+7d) | -52.4d → -58.4d |
| CON-LEG101-LR-9490 | Installation of 8POE ports Industrial Switches for remote poles [Local – 04 ] | 2027-09-01 → 2027-09-08 (+7d) | 2027-09-08 → 2027-09-15 (+7d) | -52.4d → -58.4d |
| CON-LEG101-LR-9660 | Installation of IP Outdoor CCTV POE Camera,5 MP, Metal Housing [Local – 04 ] | 2027-09-09 → 2027-09-16 (+7d) | 2027-09-18 → 2027-09-26 (+8d) | -52.4d → -58.4d |
| CON-LEG101-LR-9740 | Installation of Outdoor PTZ IP66 [Local – 04 ] | 2027-09-19 → 2027-09-27 (+8d) | 2027-09-30 → 2027-10-07 (+7d) | -52.4d → -58.4d |
| CON-LEG101-LR-9990 | Installation of Short Range wireless point to point wireless bridge [Local – 04 ] | 2027-10-02 → 2027-10-09 (+7d) | 2027-10-14 → 2027-10-21 (+7d) | -52.4d → -58.4d |
| 12 | **Earthing System** | 2027-10-16 → 2027-10-23 (+7d) | 2027-10-24 → 2027-10-31 (+7d) |  |
| CON-LEG101-LR-15160 | Installation of Earthing for Distribution panels,SL feeder pillars, KWH, Unit substations and RMU [Local – 04 ] | 2027-10-16 → 2027-10-23 (+7d) | 2027-10-24 → 2027-10-31 (+7d) | -52.4d → -58.4d |
| 9 | **Road Lighting** | 2027-07-03 → 2027-07-10 (+7d) | 2027-09-16 → 2027-09-25 (+9d) |  |
| CON-LEG101-LR-8130 | Installation of Lighting poles [Local – 04 ] | 2027-07-03 → 2027-07-10 (+7d) | 2027-07-22 → 2027-07-29 (+7d) | -81.5d → -53.5d |
| CON-LEG101-LR-8230 | Installation of Street Lighting Luminaire [Local – 04 ] | 2027-07-24 → 2027-07-31 (+7d) | 2027-07-29 → 2027-08-05 (+7d) | -14.4d → -20.4d |
| CON-LEG101-LR-7450 | Installation of Unit Substation Including concrete foundations and fencing [Local – 04 ] | 2027-08-17 → 2027-08-24 (+7d) | 2027-08-24 → 2027-08-31 (+7d) | -29.4d → -35.4d |
| CON-LEG101-LR-7530 | Installation of Ring Main Unit RMU [Local – 04 ] | 2027-08-25 → 2027-09-01 (+7d) | 2027-09-09 → 2027-09-16 (+7d) | -29.4d → -35.4d |
| CON-LEG101-LR-8380 | Installation of Earthing for Streetlighting feeders for every end pole circuits. [Local – 04 ] | 2027-09-11 → 2027-09-18 (+7d) | 2027-09-16 → 2027-09-25 (+9d) | -29.4d → -35.4d |
| 5 | **Local – 05** |  | 2027-08-09 → 2027-08-16 (+7d) |  |
| 5 | **TSE Network** |  | 2026-12-19 → 2026-12-26 (+7d) |  |
| 1 | **Valves/Chamber** |  | 2026-12-19 → 2026-12-26 (+7d) |  |
| CON-LEG101-LR-2740 | Installation of Air Valve chambers [Local – 05 ] |  | 2026-12-19 → 2026-12-26 (+7d) | 176.24d → 175.24d |
| CON-LEG101-LR-2660 | Installation of Wash out chambers [Local – 05 ] |  | 2026-12-17 → 2026-12-24 (+7d) | 176.24d → 175.24d |
| 6 | **Public Water Utility Distribution** |  | 2026-12-20 → 2026-12-27 (+7d) |  |
| 1 | **Valves/Chamber** |  | 2026-12-20 → 2026-12-27 (+7d) |  |
| CON-LEG101-LR-1240 | Installation of Wash out chambers [Local – 05 ] |  | 2026-12-20 → 2026-12-27 (+7d) | 202.44d → 196.44d |
| 1 | **Electrical Works** |  | 2027-06-23 → 2027-06-30 (+7d) |  |
| 3 | **Low Voltage** |  | 2027-06-23 → 2027-06-30 (+7d) |  |
| CON-LEG101-LR-8820 | Installation of Earthing System [Local – 05 ] | 2027-06-22 → 2027-06-29 (+7d) | 2027-06-23 → 2027-06-30 (+7d) | 24.4d → 23.4d |
| 10 | **Telecommunications** |  | 2027-06-23 → 2027-06-30 (+7d) |  |
| CON-LEG101-LR-9090 | Installation of Sand encased duct banks for secondary network [Local – 05 ] |  | 2027-06-22 → 2027-06-29 (+7d) | 24.6d → 23.6d |
| CON-LEG101-LR-9190 | Installation of Sand and soil encased duct banks, for combined network of primary and secondary [Local – 05 ] |  | 2027-06-23 → 2027-06-30 (+7d) | 24.6d → 23.6d |
| 11 | **CCTV feeding system and GSM** |  | 2027-07-05 → 2027-07-12 (+7d) |  |
| CON-LEG101-LR-9600 | Installation of Stand rack 42U- 19" [Local – 05 ] | 2027-06-24 → 2027-07-01 (+7d) | 2027-06-27 → 2027-07-04 (+7d) | 44.6d → 38.6d |
| CON-LEG101-LR-9810 | Installation of LED Screen 43" (24/7 operation) with Ethernet decoders [Local – 05 ] | 2027-07-04 → 2027-07-11 (+7d) | 2027-07-05 → 2027-07-12 (+7d) | 39.6d → 33.6d |
| 12 | **Earthing System** | 2027-08-05 → 2027-08-12 (+7d) | 2027-08-08 → 2027-08-15 (+7d) |  |
| CON-LEG101-LR-15150 | Installation of Earthing for Distribution panels,SL feeder pillars, KWH, Unit substations and RMU [Local – 05 ] | 2027-08-05 → 2027-08-12 (+7d) | 2027-08-08 → 2027-08-15 (+7d) | 12.7d → 6.7d |
| 9 | **Road Lighting** |  | 2027-08-09 → 2027-08-16 (+7d) |  |
| CON-LEG101-LR-7460 | Installation of Unit Substation Including concrete foundations and fencing [Local – 05 ] |  | 2027-07-28 → 2027-08-04 (+7d) | 11.7d → 5.7d |
| CON-LEG101-LR-8390 | Installation of Earthing for Streetlighting feeders for every end pole circuits. [Local – 05 ] |  | 2027-08-09 → 2027-08-16 (+7d) | 11.7d → 5.7d |
| CON-LEG101-LR-7540 | Installation of Ring Main Unit RMU [Local – 05 ] | 2027-07-28 → 2027-08-04 (+7d) | 2027-08-05 → 2027-08-12 (+7d) | 11.7d → 5.7d |
| 6 | **Local – 06** |  | 2027-08-03 → 2027-08-10 (+7d) |  |
| 10 | **Telecommunications** |  | 2027-06-23 → 2026-11-11 (-224d) |  |

| ID | Task | Start | Finish | Complete | Total float |
| --- | --- | --- | --- | --- | --- |
| CON-LEG101-LR-9100 | Installation of Sand encased duct banks for secondary network [Local – 06 ] |  | 2027-06-22 → 2026-11-11 A (-223d) | 80% → 100% | 24.8d → none |
| CON-LEG101-LR-9200 | Installation of Sand and soil encased duct banks, for combined network of primary and secondary [Local – 06 ] |  | 2027-06-23 → 2026-11-11 A (-224d) | 80% → 100% | 24.8d → none |
| 12 | **Earthing System** | 2027-07-31 → 2027-08-07 (+7d) | 2027-08-03 → 2027-08-10 (+7d) |  |  |
| CON-LEG101-LR-15140 | Installation of Earthing for Distribution panels,SL feeder pillars, KWH, Unit substations and RMU [Local – 06 ] | 2027-07-31 → 2027-08-07 (+7d) | 2027-08-03 → 2027-08-10 (+7d) |  | 16.8d → 10.8d |
| 9 | **Road Lighting** |  | 2027-08-02 → 2027-08-09 (+7d) |  |  |
| CON-LEG101-LR-7470 | Installation of Unit Substation Including concrete foundations and fencing [Local – 06 ] |  | 2027-07-26 → 2027-08-02 (+7d) |  | 16.8d → 10.8d |
| CON-LEG101-LR-8400 | Installation of Earthing for Streetlighting feeders for every end pole circuits. [Local – 06 ] |  | 2027-08-02 → 2027-08-09 (+7d) |  | 17.7d → 11.7d |
| CON-LEG101-LR-7550 | Installation of Ring Main Unit RMU [Local – 06 ] | 2027-07-26 → 2027-08-02 (+7d) | 2027-07-31 → 2027-08-07 (+7d) |  | 16.8d → 10.8d |
| 7 | **Local – 07** |  | 2027-08-05 → 2027-08-12 (+7d) |  |  |
| 12 | **Earthing System** | 2027-08-01 → 2027-08-08 (+7d) | 2027-08-05 → 2027-08-12 (+7d) |  |  |
| CON-LEG101-LR-15130 | Installation of Earthing for Distribution panels,SL feeder pillars, KWH, Unit substations and RMU [Local – 07 ] | 2027-08-01 → 2027-08-08 (+7d) | 2027-08-05 → 2027-08-12 (+7d) |  | 15.4d → 9.4d |
| 9 | **Road Lighting** |  | 2027-08-03 → 2027-08-10 (+7d) |  |  |
| CON-LEG101-LR-7480 | Installation of Unit Substation Including concrete foundations and fencing [Local – 07 ] |  | 2027-07-27 → 2027-08-03 (+7d) |  | 15.4d → 9.4d |
| CON-LEG101-LR-8410 | Installation of Earthing for Streetlighting feeders for every end pole circuits. [Local – 07 ] |  | 2027-08-03 → 2027-08-10 (+7d) |  | 17.4d → 11.4d |
| CON-LEG101-LR-7560 | Installation of Ring Main Unit RMU [Local – 07 ] | 2027-07-27 → 2027-08-03 (+7d) | 2027-08-01 → 2027-08-08 (+7d) |  | 15.4d → 9.4d |
| 8 | **Local – 08** |  | 2027-08-03 → 2027-08-10 (+7d) |  |  |
| 5 | **TSE Network** |  | 2026-12-19 → 2026-12-26 (+7d) |  |  |
| 1 | **Valves/Chamber** |  | 2026-12-19 → 2026-12-26 (+7d) |  |  |
| CON-LEG101-LR-2750 | Installation of Air Valve chambers [Local – 08 ] |  | 2026-12-19 → 2026-12-26 (+7d) |  | 186.6d → 182.7d |
| CON-LEG101-LR-2670 | Installation of Wash out chambers [Local – 08 ] |  | 2026-12-17 → 2026-12-24 (+7d) |  | 186.6d → 182.7d |
| 1 | **Electrical Works** |  | 2027-07-11 → 2027-07-18 (+7d) |  |  |
| 3 | **Low Voltage** |  | 2027-07-11 → 2027-07-18 (+7d) |  |  |
| CON-LEG101-LR-8500 | Installation of Low Voltage Distribution Panel [Local – 08 ] | 2027-07-04 → 2027-07-11 (+7d) | 2027-07-11 → 2027-07-18 (+7d) |  | 17.7d → 13.8d |
| 11 | **CCTV feeding system and GSM** |  | 2027-07-11 → 2027-07-18 (+7d) |  |  |
| CON-LEG101-LR-9820 | Installation of LED Screen 43" (24/7 operation) with Ethernet decoders [Local – 08 ] | 2027-07-04 → 2027-07-11 (+7d) | 2027-07-11 → 2027-07-18 (+7d) |  | 17.7d → 13.8d |
| 12 | **Earthing System** | 2027-08-01 → 2027-08-08 (+7d) | 2027-08-03 → 2027-08-10 (+7d) |  |  |
| CON-LEG101-LR-8320 | Installation of Earthing for Distribution panels,SL feeder pillars, KWH, Unit substations and RMU [Local – 08 ] | 2027-08-01 → 2027-08-08 (+7d) | 2027-08-03 → 2027-08-10 (+7d) |  | 0.5d → -3.4d |
| 9 | **Road Lighting** |  | 2027-08-03 → 2027-08-10 (+7d) |  |  |
| CON-LEG101-LR-7490 | Installation of Unit Substation Including concrete foundations and fencing [Local – 08 ] |  | 2027-07-26 → 2027-08-02 (+7d) |  | 0.5d → -3.4d |
| CON-LEG101-LR-8470 | Installation of Street Lighting feeder pillars / Lighting panels [Local – 08 ] |  | 2027-08-01 → 2027-08-08 (+7d) |  | 0.5d → -3.4d |
| CON-LEG101-LR-7570 | Installation of Ring Main Unit RMU [Local – 08 ] | 2027-07-26 → 2027-08-02 (+7d) | 2027-07-31 → 2027-08-07 (+7d) |  | 0.5d → -3.4d |
| CON-LEG101-LR-8420 | Installation of Earthing for Streetlighting feeders for every end pole circuits. [Local – 08 ] | 2027-08-01 → 2027-08-08 (+7d) | 2027-08-03 → 2027-08-10 (+7d) |  | 17.4d → 11.4d |
| CON-LEG101-BR-1210 | Installation of GRP Panel [Bridge ] |  |  | 20% → 40% |  |
| CON-LEG101-BR-1200 | Installation of Guard Rail [Bridge ] | 2027-07-24 → 2026-11-17 A (-249d) | 2027-08-15 → 2027-08-17 (+2d) | 0% → 20% |  |
| CON-LEG101-BR-1160 | Membrane waterproofing for concert in touch with soil and membrane waterproofing for bridge slab [Bridge ] | 2026-11-11 → 2026-11-18 (+7d) | 2026-11-22 → 2026-11-29 (+7d) |  |  |
| CON-LEG101-BR-1170 | Placing of Protective Coating for Concrete Surfaces [Bridge ] | 2026-11-23 → 2026-11-30 (+7d) | 2026-12-07 → 2026-12-14 (+7d) |  |  |
| CON-LEG101-BR-1260 | Asphalt Wearing Cource | 2026-12-08 → 2026-12-15 (+7d) | 2026-12-10 → 2026-12-17 (+7d) |  |  |
| CON-LEG101-BR-1190 | Installation of expansion joints for bridges [Bridge ] | 2026-12-12 → 2026-12-19 (+7d) | 2026-12-27 → 2027-01-03 (+7d) |  |  |
| 4 | **Outside Boundary Area (Tie-in Lines)** |  | 2027-07-11 → 2027-07-18 (+7d) |  |  |
| 3 | **TSE Network** |  | 2027-07-11 → 2027-07-18 (+7d) |  |  |
| 1 | **Valves/Chamber** |  | 2027-07-11 → 2027-07-18 (+7d) |  |  |
| CON-LEG101-OBA-1070 | Installation of Butterfly valves (In Chamber) [Outside Boundary Area ] |  | 2027-07-11 → 2027-07-18 (+7d) |  | 5.18d → -0.82d |
| CON-LEG101-OBA-1500 | Installation of Valve Chamber [Outside Boundary Area ] |  | 2027-07-11 → 2027-07-18 (+7d) |  | 5.18d → -0.82d |
| 5 | **Public Water Utility Distribution** |  | 2026-11-14 → 2026-11-21 (+7d) |  |  |
| 3 | **Public Water Utility Distribution (0 - 900) m** |  | 2026-11-12 → 2026-11-19 (+7d) |  |  |
| 1 | **Valves/Chamber** |  | 2026-11-12 → 2026-11-19 (+7d) |  |  |
| CON-LEG101-OBA-1420 | Installation of Air Valve chambers [Outside Boundary Area ] 0 - 900 m |  | 2026-11-12 → 2026-11-19 (+7d) |  | 201.21d → 195.21d |
| CON-LEG101-OBA-1430 | Installation of Air Valves [Outside Boundary Area ] 0 - 900 m |  | 2026-11-12 → 2026-11-19 (+7d) |  | 201.21d → 195.21d |
| 1 | **Public Water Utility Distribution (901 - 1800) m** |  | 2026-11-14 → 2026-11-21 (+7d) |  |  |
| 1 | **Valves/Chamber** |  | 2026-11-14 → 2026-11-21 (+7d) |  |  |
| CON-LEG101-OBA-1440 | Installation of Air Valve chambers [Outside Boundary Area ] 901 - 1800 m |  | 2026-11-12 → 2026-11-19 (+7d) |  | 201.21d → 195.21d |
| CON-LEG101-OBA-1450 | Installation of Air Valves [Outside Boundary Area ] 901 - 1800 m |  | 2026-11-14 → 2026-11-21 (+7d) |  | 201.21d → 195.21d |
| CON-LEG101-OBA-1510 | Installation of Butterfly valves, on pipe with diameter 400 mm |  | 2026-11-14 → 2026-11-21 (+7d) |  | 201.21d → 195.21d |
| 8 | **Roads Finishing** |  | 2027-12-29 → 2028-01-05 (+7d) |  |  |
| 1 | **Local – 01** |  | 2027-11-22 → 2027-11-02 (-20d) |  |  |
| 1 | **LOCAL - 01 Segment-01 (From 0+000 to 1+066)** |  | 2027-10-13 → 2027-09-28 (-15d) |  |  |
| 1 | **Asphalt Wearing Course** |  | 2027-08-17 → 2027-08-24 (+7d) |  |  |
| CON-LEG101-LR-5980 | Tack coat (RC2) [Local – 01 Segment-01] |  | 2027-08-15 → 2027-08-22 (+7d) |  | -61.85d → -59.85d |
| CON-LEG101-LR-6080 | Bituminous wearing course [Local – 01 Segment-01] |  | 2027-08-17 → 2027-08-24 (+7d) |  | -61.85d → -59.85d |
| 5 | **Pavement Markings** | 2027-09-04 → 2026-11-11 (-297d) | 2027-09-22 → 2027-09-08 (-14d) |  |  |
| CON-LEG101-LR-6580 | Pavement Markings (White Paint/Yellow Paint) [Local – 01 Segment-01] | 2027-09-04 → 2026-11-11 A (-297d) | 2027-09-11 → 2027-08-28 (-14d) | 0% → 50% | -77.25d → -59.85d |
| CON-LEG101-LR-6680 | Handicap ramp [Local – 01 Segment-01] | 2027-09-11 → 2027-08-28 (-14d) | 2027-09-22 → 2027-09-08 (-14d) |  | -72.25d → -59.85d |
| 6 | **Traffic Signs** |  | 2027-10-13 → 2027-09-28 (-15d) |  |  |
| CON-LEG101-LR-6780 | Installation of Traffic Signs [Local – 01 Segment-01] |  | 2027-10-13 → 2027-09-28 (-15d) |  | -51.05d → -38.65d |
| CON-LEG101-LR-6480 | Retroreflective Plastic Cones [Local – 01 Segment-01] | 2027-09-22 → 2027-09-08 (-14d) | 2027-10-04 → 2027-09-19 (-15d) |  | -71.25d → -58.85d |
| 2 | **LOCAL - 01 Segment-02 (From 1+066 to 2+133)** |  | 2027-10-30 → 2027-10-10 (-20d) |  |  |
| 1 | **Asphalt Wearing Course** |  | 2027-08-21 → 2027-08-28 (+7d) |  |  |
| CON-LEG101-LR-5990 | Tack coat (RC2) [Local – 01 Segment-02] |  | 2027-08-19 → 2027-08-26 (+7d) |  | -49.05d → -55.05d |
| CON-LEG101-LR-6090 | Bituminous wearing course [Local – 01 Segment-02] |  | 2027-08-21 → 2027-08-28 (+7d) |  | -49.05d → -55.05d |
| 5 | **Pavement Markings** | 2027-09-11 → 2026-11-12 (-303d) | 2027-10-11 → 2027-09-20 (-21d) |  |  |

| ID | Task | Start | Finish | Complete | Total float |
| --- | --- | --- | --- | --- | --- |
| CON-LEG101-LR-6590 | Pavement Markings (White Paint/Yellow Paint) [Local – 01 Segment-02] | 2027-09-11 → 2026-11-12 A (-303d) | 2027-09-29 → 2027-09-05 (-24d) | 0% → 50% | -77.25d → -57.35d |
| CON-LEG101-LR-6690 | Handicap ramp [Local – 01 Segment-02] | 2027-09-29 → 2027-09-08 (-21d) | 2027-10-11 → 2027-09-20 (-21d) |  | -77.25d → -59.85d |
| 6 | **Traffic Signs** |  | 2027-10-30 → 2027-10-10 (-20d) |  |  |
| CON-LEG101-LR-6790 | Installation of Traffic Signs [Local – 01 Segment-02] |  | 2027-10-30 → 2027-10-10 (-20d) |  | -61.45d → -44.05d |
| CON-LEG101-LR-6490 | Retroreflective Plastic Cones [Local – 01 Segment-02] | 2027-10-11 → 2027-09-20 (-21d) | 2027-10-25 → 2027-10-05 (-20d) |  | -77.25d → -59.85d |
| 3 | **LOCAL - 01 Segment-03 (From 2+133 to 3+200)** |  | 2027-11-22 → 2027-11-02 (-20d) |  |  |
| 1 | **Asphalt Wearing Course** |  | 2027-08-22 → 2027-08-29 (+7d) |  |  |
| CON-LEG101-LR-6000 | Tack coat (RC2) [Local – 01 Segment-03] |  | 2027-08-22 → 2027-08-29 (+7d) |  | -49.05d → -55.05d |
| CON-LEG101-LR-6100 | Bituminous wearing course [Local – 01 Segment-03] |  | 2027-08-22 → 2027-08-29 (+7d) |  | -49.05d → -55.05d |
| 5 | **Pavement Markings** | 2027-09-29 → 2026-11-12 (-321d) | 2027-10-25 → 2027-10-05 (-20d) |  |  |
| CON-LEG101-LR-6600 | Pavement Markings (White Paint/Yellow Paint) [Local – 01 Segment-03] | 2027-09-29 → 2026-11-12 A (-321d) | 2027-10-11 → 2027-09-11 (-30d) | 0% → 50% | -77.25d → -52.35d |
| CON-LEG101-LR-6700 | Handicap ramp [Local – 01 Segment-03] | 2027-10-11 → 2027-09-20 (-21d) | 2027-10-25 → 2027-10-05 (-20d) |  | -77.25d → -59.85d |
| 6 | **Traffic Signs** |  | 2027-11-22 → 2027-11-02 (-20d) |  |  |
| CON-LEG101-LR-6800 | Installation of Traffic Signs [Local – 01 Segment-03] |  | 2027-11-22 → 2027-11-02 (-20d) |  | -77.25d → -59.85d |
| CON-LEG101-LR-6500 | Retroreflective Plastic Cones [Local – 01 Segment-03] | 2027-10-25 → 2027-10-05 (-20d) | 2027-11-17 → 2027-10-28 (-20d) |  | -77.25d → -59.85d |
| 2 | **Local – 02** |  | 2027-11-20 → 2027-10-16 (-35d) |  |  |
| 4 | **Interlocking block sidewalk/footpath** |  | 2027-08-26 → 2027-09-01 (+6d) |  |  |
| CON-LEG101-LR-6310 | Interlocking block pavers for sidewalk/footpath [Local – 02 ] |  | 2027-08-26 → 2027-09-01 (+6d) | 80% → 85% | -3.25d → -8.2d |
| 5 | **Pavement Markings** | 2027-10-11 → 2026-11-14 (-331d) | 2027-11-03 → 2027-09-29 (-35d) |  |  |
| CON-LEG101-LR-6610 | Pavement Markings (White Paint/Yellow Paint) [Local – 02 ] | 2027-10-11 → 2026-11-14 A (-331d) | 2027-10-23 → 2027-09-16 (-37d) | 0% → 50% | -75.25d → -45.35d |
| CON-LEG101-LR-6710 | Handicap ramp [Local – 02 ] | 2027-10-23 → 2027-09-16 (-37d) | 2027-11-03 → 2027-09-29 (-35d) |  | -75.25d → -45.35d |
| 6 | **Traffic Signs** |  | 2027-11-20 → 2027-10-16 (-35d) |  |  |
| CON-LEG101-LR-6810 | Installation of Traffic Signs [Local – 02 ] |  | 2027-11-20 → 2027-10-16 (-35d) |  | -75.25d → -45.35d |
| CON-LEG101-LR-6510 | Retroreflective Plastic Cones [Local – 02 ] | 2027-11-03 → 2027-09-29 (-35d) | 2027-11-15 → 2027-10-11 (-35d) |  | -75.25d → -45.35d |
| 3 | **Local – 03** |  | 2027-10-17 → 2027-10-04 (-13d) |  |  |
| 1 | **Asphalt Wearing Course** |  | 2027-08-23 → 2027-08-30 (+7d) |  |  |
| CON-LEG101-LR-6020 | Tack coat (RC2) [Local – 03 ] |  | 2027-08-23 → 2027-08-30 (+7d) |  | -49.05d → -55.05d |
| CON-LEG101-LR-6120 | Bituminous wearing course [Local – 03 ] |  | 2027-08-23 → 2027-08-30 (+7d) |  | -49.05d → -55.05d |
| 5 | **Pavement Markings** | 2027-09-04 → 2026-11-14 (-294d) | 2027-09-28 → 2027-09-16 (-12d) |  |  |
| CON-LEG101-LR-6620 | Pavement Markings (White Paint/Yellow Paint) [Local – 03 ] | 2027-09-04 → 2026-11-14 A (-294d) | 2027-09-15 → 2027-09-05 (-10d) | 0% → 50% | -46.05d → -35.05d |
| CON-LEG101-LR-6720 | Handicap ramp [Local – 03 ] | 2027-09-15 → 2027-09-05 (-10d) | 2027-09-28 → 2027-09-16 (-12d) |  | -46.05d → -35.05d |
| 6 | **Traffic Signs** |  | 2027-10-17 → 2027-10-04 (-13d) |  |  |
| CON-LEG101-LR-6820 | Installation of Traffic Signs [Local – 03 ] |  | 2027-10-17 → 2027-10-04 (-13d) | 70% → 80% | -46.05d → -35.05d |
| CON-LEG101-LR-6520 | Retroreflective Plastic Cones [Local – 03 ] | 2027-09-28 → 2027-09-16 (-12d) | 2027-10-10 → 2027-09-29 (-11d) |  | -46.05d → -35.05d |
| 4 | **Local – 04** | 2027-10-10 → 2027-10-17 (+7d) | 2027-12-29 → 2028-01-05 (+7d) |  |  |
| 7 | **Concrete Curb** | 2027-10-10 → 2027-10-17 (+7d) | 2027-11-02 → 2027-11-09 (+7d) |  |  |
| CON-LEG101-LR-6230 | Installation of Precast Concrete Curb [Local – 04 ] | 2027-10-10 → 2027-10-17 (+7d) | 2027-11-02 → 2027-11-09 (+7d) |  | -147.5d → -119.5d |
| 1 | **Asphalt Wearing Course** | 2027-11-03 → 2027-11-10 (+7d) | 2027-11-08 → 2027-11-15 (+7d) |  |  |
| CON-LEG101-LR-6030 | Tack coat (RC2) [Local – 04 ] | 2027-11-03 → 2027-11-10 (+7d) | 2027-11-04 → 2027-11-11 (+7d) |  | -109.4d → -115.4d |
| CON-LEG101-LR-6130 | Bituminous wearing course [Local – 04 ] | 2027-11-06 → 2027-11-13 (+7d) | 2027-11-08 → 2027-11-15 (+7d) |  | -109.4d → -115.4d |
| 3 | **Interlocking block roads/on-street parking** | 2027-11-09 → 2027-11-16 (+7d) | 2027-11-30 → 2027-12-07 (+7d) |  |  |
| CON-LEG101-LR-6430 | Interlocking block pavers for roads/on-street parking [Local – 04 ] | 2027-11-09 → 2027-11-16 (+7d) | 2027-11-30 → 2027-12-07 (+7d) |  | -103.4d → -109.4d |
| 4 | **Interlocking block sidewalk/footpath** | 2027-12-01 → 2027-12-08 (+7d) | 2027-12-22 → 2027-12-29 (+7d) |  |  |
| CON-LEG101-LR-6330 | Interlocking block pavers for sidewalk/footpath [Local – 04 ] | 2027-12-01 → 2027-12-08 (+7d) | 2027-12-22 → 2027-12-29 (+7d) |  | -103.4d → -109.4d |
| 5 | **Pavement Markings** | 2027-11-09 → 2027-11-16 (+7d) | 2027-12-01 → 2027-12-08 (+7d) |  |  |
| CON-LEG101-LR-6630 | Pavement Markings (White Paint/Yellow Paint) [Local – 04 ] | 2027-11-09 → 2027-11-16 (+7d) | 2027-11-20 → 2027-11-27 (+7d) |  | -109.4d → -115.4d |
| CON-LEG101-LR-6730 | Handicap ramp [Local – 04 ] | 2027-11-21 → 2027-11-28 (+7d) | 2027-12-01 → 2027-12-08 (+7d) |  | -109.4d → -115.4d |
| 6 | **Traffic Signs** | 2027-12-02 → 2027-12-09 (+7d) | 2027-12-29 → 2028-01-05 (+7d) |  |  |
| CON-LEG101-LR-6530 | Retroreflective Plastic Cones [Local – 04 ] | 2027-12-02 → 2027-12-09 (+7d) | 2027-12-13 → 2027-12-20 (+7d) |  | -109.4d → -115.4d |
| CON-LEG101-LR-6830 | Installation of Traffic Signs [Local – 04 ] | 2027-12-14 → 2027-12-21 (+7d) | 2027-12-29 → 2028-01-05 (+7d) |  | -109.4d → -115.4d |
| 5 | **Local – 05** |  | 2027-12-11 → 2027-12-12 (+1d) |  |  |
| 5 | **Pavement Markings** | 2027-11-09 → 2026-11-15 (-359d) | 2027-12-01 → 2027-12-02 (+1d) |  |  |
| CON-LEG101-LR-6640 | Pavement Markings (White Paint/Yellow Paint) [Local – 05 ] | 2027-11-09 → 2026-11-15 A (-359d) | 2027-11-20 → 2027-11-21 (+1d) | 0% → 50% | -92.6d → -93.6d |
| CON-LEG101-LR-6740 | Handicap ramp [Local – 05 ] | 2027-11-21 → 2027-11-22 (+1d) | 2027-12-01 → 2027-12-02 (+1d) |  | -92.6d → -93.6d |
| 6 | **Traffic Signs** |  | 2027-12-11 → 2027-12-12 (+1d) |  |  |
| CON-LEG101-LR-6840 | Installation of Traffic Signs [Local – 05 ] |  | 2027-12-11 → 2027-12-12 (+1d) |  | -92.6d → -93.6d |
| CON-LEG101-LR-6540 | Retroreflective Plastic Cones [Local – 05 ] | 2027-12-02 → 2027-12-04 (+2d) | 2027-12-07 → 2027-12-08 (+1d) |  | -92.6d → -93.6d |
| 6 | **Local – 06** |  | 2027-12-09 → 2027-12-11 (+2d) |  |  |
| 5 | **Pavement Markings** | 2027-11-09 → 2026-11-15 (-359d) | 2027-12-01 → 2027-12-02 (+1d) |  |  |
| CON-LEG101-LR-6650 | Pavement Markings (White Paint/Yellow Paint) [Local – 06 ] | 2027-11-09 → 2026-11-15 A (-359d) | 2027-11-20 → 2027-11-21 (+1d) | 0% → 50% | -92.4d → -93.4d |
| CON-LEG101-LR-6750 | Handicap ramp [Local – 06 ] | 2027-11-21 → 2027-11-22 (+1d) | 2027-12-01 → 2027-12-02 (+1d) |  | -92.4d → -93.4d |
| 6 | **Traffic Signs** |  | 2027-12-09 → 2027-12-11 (+2d) |  |  |
| CON-LEG101-LR-6850 | Installation of Traffic Signs [Local – 06 ] |  | 2027-12-09 → 2027-12-11 (+2d) |  | -92.4d → -93.4d |
| CON-LEG101-LR-6550 | Retroreflective Plastic Cones [Local – 06 ] | 2027-12-02 → 2027-12-04 (+2d) | 2027-12-06 → 2027-12-07 (+1d) |  | -92.4d → -93.4d |
| 7 | **Local – 07** |  | 2027-11-22 → 2027-11-27 (+5d) |  |  |
| 1 | **Asphalt Wearing Course** |  | 2027-11-04 → 2027-11-11 (+7d) |  |  |
| CON-LEG101-LR-6060 | Tack coat (RC2) [Local – 07 ] |  | 2027-11-03 → 2027-11-10 (+7d) |  | -77.1d → -81.1d |
| CON-LEG101-LR-6160 | Bituminous wearing course [Local – 07 ] |  | 2027-11-04 → 2027-11-11 (+7d) |  | -77.1d → -81.1d |
| 5 | **Pavement Markings** | 2027-11-04 → 2026-11-16 (-353d) | 2027-11-14 → 2027-11-18 (+4d) |  |  |
| CON-LEG101-LR-6660 | Pavement Markings (White Paint/Yellow Paint) [Local – 07 ] | 2027-11-04 → 2026-11-16 A (-353d) | 2027-11-09 → 2027-11-14 (+5d) | 0% → 50% | -77.1d → -81.1d |

| ID | Task | Start | Finish | Complete | Total float |
| --- | --- | --- | --- | --- | --- |
| CON-LEG101-LR-6760 | Handicap ramp [Local – 07 ] | 2027-11-09 → 2027-11-14 (+5d) | 2027-11-14 → 2027-11-18 (+4d) |  | -77.1d → -81.1d |
| 6 | **Traffic Signs** |  | 2027-11-22 → 2027-11-27 (+5d) |  |  |
| CON-LEG101-LR-6860 | Installation of Traffic Signs [Local – 07 ] |  | 2027-11-22 → 2027-11-27 (+5d) |  | -77.1d → -81.1d |
| CON-LEG101-LR-6560 | Retroreflective Plastic Cones [Local – 07 ] | 2027-11-14 → 2027-11-18 (+4d) | 2027-11-18 → 2027-11-23 (+5d) |  | -77.1d → -81.1d |
| 8 | **Local – 08** |  | 2027-11-22 → 2027-11-27 (+5d) |  |  |
| 7 | **Concrete Curb** |  | 2027-11-06 → 2026-11-12 (-359d) |  |  |
| CON-LEG101-LR-6270 | Installation of Precast Concrete Curb [Local – 08 ] |  | 2027-11-06 → 2026-11-12 A (-359d) | 85% → 100% | -77.3d → none |
| 4 | **Interlocking block sidewalk/footpath** |  | 2027-11-11 → 2027-11-14 (+3d) |  |  |
| CON-LEG101-LR-6370 | Interlocking block pavers for sidewalk/footpath [Local – 08 ] |  | 2027-11-11 → 2027-11-14 (+3d) | 75% → 85% | -67.75d → -69.55d |
| 5 | **Pavement Markings** | 2027-11-06 → 2027-11-10 (+4d) | 2027-11-15 → 2027-11-18 (+3d) |  |  |
| CON-LEG101-LR-6670 | Pavement Markings (White Paint/Yellow Paint) [Local – 08 ] | 2027-11-06 → 2027-11-10 (+4d) | 2027-11-10 → 2027-11-14 (+4d) |  | -77.3d → -81.2d |
| CON-LEG101-LR-6770 | Handicap ramp [Local – 08 ] | 2027-11-10 → 2027-11-15 (+5d) | 2027-11-15 → 2027-11-18 (+3d) |  | -77.3d → -81.2d |
| 6 | **Traffic Signs** |  | 2027-11-22 → 2027-11-27 (+5d) |  |  |
| CON-LEG101-LR-6870 | Installation of Traffic Signs [Local – 08 ] |  | 2027-11-22 → 2027-11-27 (+5d) |  | -77.3d → -81.2d |
| CON-LEG101-LR-6570 | Retroreflective Plastic Cones [Local – 08 ] | 2027-11-15 → 2027-11-20 (+5d) | 2027-11-20 → 2027-11-23 (+3d) |  | -77.3d → -81.2d |
| 1 | **Fence and Gate Segment -01 (From 0+000 to 0+671)** |  | 2027-03-13 → 2027-03-20 (+7d) |  |  |
| 1 | **Fence** |  | 2027-03-13 → 2027-03-20 (+7d) |  |  |
| CON-LEG101-FG-1000 | Excavation for Fences [Fence and Gate Segment -01] |  | 2026-11-15 → 2026-11-22 (+7d) |  | 9.28d → 3.42d |
| CON-LEG101-FG-1100 | Lean concrete for Foundation [Fence and Gate Segment -01] |  | 2026-11-19 → 2026-11-26 (+7d) |  | 9.28d → 3.42d |
| CON-LEG101-FG-1150 | Reinforced concrete Structure [Fence and Gate Segment -01] |  | 2026-12-10 → 2026-12-17 (+7d) |  | 9.28d → 3.42d |
| CON-LEG101-FG-1200 | Spraying of bituminous paint waterproofing for R.C foundation [Fence and Gate Segment -01] | 2026-12-10 → 2026-12-17 (+7d) | 2026-12-22 → 2026-12-29 (+7d) |  | 9.28d → 3.42d |
| CON-LEG101-FG-1260 | Embankments to the Fences [Fence and Gate Segment -01] | 2026-12-22 → 2026-12-29 (+7d) | 2026-12-31 → 2027-01-07 (+7d) |  | 9.28d → 3.42d |
| CON-LEG101-FG-1050 | Concrete Works for Ground Beam for Fences [Fence and Gate Segment -01] | 2026-12-31 → 2027-01-07 (+7d) | 2027-01-24 → 2027-01-31 (+7d) |  | 9.28d → 3.42d |
| CON-LEG101-FG-1420 | Plster Works for Fences [Fence and Gate Segment -01] | 2027-01-24 → 2027-01-31 (+7d) | 2027-02-07 → 2027-02-18 (+11d) |  | 9.28d → 3.42d |
| CON-LEG101-FG-1280 | Installation of Metal Fence [Fence and Gate Segment -01] | 2027-02-07 → 2027-02-18 (+11d) | 2027-03-01 → 2027-03-08 (+7d) |  | 9.28d → 3.42d |
| CON-LEG101-FG-1340 | Paint On Cement Plaster [Fence and Gate Segment -01] | 2027-03-01 → 2027-03-08 (+7d) | 2027-03-13 → 2027-03-20 (+7d) |  | 9.28d → 3.42d |
| 2 | **Fence and Gate Segment -02 (From 0+671 to 1+342)** |  | 2027-05-08 → 2027-05-19 (+11d) |  |  |
| 1 | **Fence** |  | 2027-05-08 → 2027-05-19 (+11d) |  |  |
| CON-LEG101-FG-1010 | Excavation for Fences [Fence and Gate Segment -02] |  | 2027-03-16 → 2027-03-23 (+7d) |  | 9.28d → 3.42d |
| CON-LEG101-FG-1110 | Lean concrete for Foundation [Fence and Gate Segment -02] |  | 2027-03-17 → 2027-03-24 (+7d) |  | 9.28d → 3.42d |
| CON-LEG101-FG-1160 | Reinforced concrete Structure [Fence and Gate Segment -02] |  | 2027-03-23 → 2027-03-30 (+7d) |  | 9.28d → 3.42d |
| CON-LEG101-FG-1210 | Spraying of bituminous paint waterproofing for R.C foundation [Fence and Gate Segment -02] |  | 2027-03-25 → 2027-04-01 (+7d) |  | 9.28d → 3.42d |
| CON-LEG101-FG-1330 | Embankments to the Fences [Fence and Gate Segment -02] |  | 2027-03-28 → 2027-04-04 (+7d) |  | 9.28d → 3.42d |
| CON-LEG101-FG-1060 | Concrete Works for Ground Beam for Fences [Fence and Gate Segment -02] |  | 2027-04-03 → 2027-04-10 (+7d) |  | 9.28d → 3.42d |
| CON-LEG101-FG-1290 | Installation of Metal Fence [Fence and Gate Segment -02] |  | 2027-04-27 → 2027-05-04 (+7d) |  | 9.28d → 3.42d |
| CON-LEG101-FG-1350 | Paint On Cement Plaster [Fence and Gate Segment -02] |  | 2027-05-08 → 2027-05-19 (+11d) |  | 9.28d → 3.42d |
| CON-LEG101-FG-1430 | Plster Works for Fences [Fence and Gate Segment -02] | 2027-04-03 → 2027-04-10 (+7d) | 2027-04-17 → 2027-04-24 (+7d) |  | 9.28d → 3.42d |
| 3 | **Fence and Gate Segment -03 (From 1+342 to 2+014)** |  | 2027-07-06 → 2027-07-13 (+7d) |  |  |
| 1 | **Fence** |  | 2027-05-27 → 2027-06-03 (+7d) |  |  |
| CON-LEG101-FG-1300 | Installation of Metal Fence [Fence and Gate Segment -03] |  | 2027-05-20 → 2027-05-27 (+7d) | 97% → 98% | 9.28d → 3.42d |
| CON-LEG101-FG-1440 | Plster Works for Fences [Fence and Gate Segment -03] |  | 2027-05-19 → 2027-05-26 (+7d) |  | 9.28d → 3.42d |
| CON-LEG101-FG-1360 | Paint On Cement Plaster [Fence and Gate Segment -03] |  | 2027-05-27 → 2027-06-03 (+7d) |  | 43.28d → 37.42d |
| 2 | **Gate** | 2027-05-20 → 2027-05-27 (+7d) | 2027-07-06 → 2027-07-13 (+7d) |  |  |
| CON-LEG101-FG-1250 | Installation of Main Entrance Motorized Gate [Fence and Gate Segment -03] | 2027-05-20 → 2027-05-27 (+7d) | 2027-06-13 → 2027-06-20 (+7d) |  | 9.28d → 3.42d |
| CON-LEG101-FG-1270 | Installation of Pedestrain Gate [Fence and Gate Segment -03] | 2027-06-13 → 2027-06-20 (+7d) | 2027-07-06 → 2027-07-13 (+7d) |  | 9.28d → 3.42d |
| CON-LEG101-FG-1450 | Plster Works for Fences [Fence and Gate Segment -04] |  | 2027-07-11 → 2027-07-18 (+7d) |  | 5.18d → -0.82d |
| 2 | **Roundabout & Landscape** |  | 2028-04-08 → 2028-03-06 (-33d) |  |  |
| 10 | **Local – 01** |  | 2027-12-27 → 2027-11-20 (-37d) |  |  |
| 1 | **LOCAL - 01 Segment-01 (From 0+000 to 1+066)** |  | 2027-11-27 → 2027-11-04 (-23d) |  |  |
| 3 | **Irrigation Works** |  | 2027-10-11 → 2027-09-22 (-19d) |  |  |
| 1 | **Secondary Irrigation** |  | 2027-10-11 → 2027-09-22 (-19d) |  |  |
| 1 | **Pipe Work** |  | 2027-08-23 → 2027-08-30 (+7d) |  |  |
| CON-LEG101-LR-5410 | Installation of tubing for risers connections from laterals [Local – 01 Segment-01] |  | 2027-08-23 → 2027-08-30 (+7d) |  | -59.15d → -27.15d |
| 2 | **Valves and Controller** | 2027-08-23 → 2026-11-07 (-289d) | 2027-10-11 → 2027-09-22 (-19d) |  |  |
| CON-LEG101-LR-5270 | Installation of Electrical Solenoid Valve [Local – 01 Segment-01] | 2027-08-23 → 2026-11-07 A (-289d) | 2027-08-29 → 2027-09-01 (+3d) | 0% → 50% | -59.15d → -27.15d |
| CON-LEG101-LR-5310 | Installation of quick coupler valve [Local – 01 Segment-01] | 2027-08-29 → 2026-11-07 A (-295d) | 2027-09-04 → 2027-09-05 (+1d) | 0% → 50% | -59.15d → -27.15d |
| CON-LEG101-LR-5350 | Installation of a Flush valve [Local – 01 Segment-01] | 2027-09-04 → 2026-11-07 A (-301d) | 2027-09-09 → 2027-09-07 (-2d) | 0% → 50% | -59.65d → -27.15d |
| CON-LEG101-LR-5470 | Installation of Advanced Irrigation controller [Local – 01 Segment-01] | 2027-09-09 → 2026-11-07 A (-306d) | 2027-09-18 → 2027-09-12 (-6d) | 0% → 50% | -59.65d → -27.15d |
| CON-LEG101-LR-5480 | Install single station decoder for valve connection [Local – 01 Segment-01] | 2027-09-18 → 2026-11-07 A (-315d) | 2027-09-27 → 2027-09-15 (-12d) | 0% → 50% | -59.65d → -27.15d |
| CON-LEG101-LR-5520 | Installation of Decoder cables 12 AWG between valves and controllers [Local – 01 Segment-01] | 2027-09-27 → 2026-11-07 A (-324d) | 2027-10-11 → 2027-09-22 (-19d) | 0% → 50% | -59.65d → -27.15d |
| 14 | **Curbs and edging** | 2027-10-11 → 2027-09-22 (-19d) | 2027-10-13 → 2027-09-26 (-17d) |  |  |
| CON-LEG101-LR-4790 | Installation of Curbs and edging [Local – 01 Segment-01] | 2027-10-11 → 2027-09-22 (-19d) | 2027-10-13 → 2027-09-26 (-17d) |  | -59.65d → -27.15d |
| 13 | **Landscape** | 2027-10-13 → 2026-11-11 (-336d) | 2027-11-27 → 2027-11-04 (-23d) |  |  |
| CON-LEG101-LR-4580 | Site preparation for Planting Area [Local – 01 Segment-01] | 2027-10-13 → 2026-11-11 A (-336d) | 2027-10-24 → 2027-10-02 (-22d) | 0% → 50% | -59.65d → -27.15d |
| CON-LEG101-LR-4650 | Placing Agricutural Soil [Local – 01 Segment-01] | 2027-10-24 → 2027-10-02 (-22d) | 2027-11-03 → 2027-10-12 (-22d) |  | -59.65d → -27.15d |
| CON-LEG101-LR-4720 | Planting Shrubs And Ground Cover [Local – 01 Segment-01] | 2027-11-03 → 2027-10-12 (-22d) | 2027-11-27 → 2027-11-04 (-23d) |  | -33.65d → -14.15d |
| 2 | **LOCAL - 01 Segment-02 (From 1+066 to 2+133)** |  | 2027-12-27 → 2027-11-20 (-37d) |  |  |
| 2 | **Irrigation Works** |  | 2027-11-23 → 2027-10-21 (-33d) |  |  |
| 1 | **Secondary Irrigation** |  | 2027-11-23 → 2027-10-21 (-33d) |  |  |
| 2 | **Valves and Controller** | 2027-11-03 → 2026-11-08 (-360d) | 2027-11-23 → 2027-10-21 (-33d) |  |  |

| ID | Task | Start | Finish | Complete | Total float |
| --- | --- | --- | --- | --- | --- |
| CON-LEG101-LR-5360 | Installation of a Flush valve [Local – 01 Segment-02] | 2027-11-03 → 2026-11-08 A (-360d) | 2027-11-09 → 2027-10-14 (-26d) | 0% → 50% | -59.65d → -27.15d |
| CON-LEG101-LR-5530 | Installation of Decoder cables 12 AWG between valves and controllers [Local – 01 Segment-02] | 2027-11-09 → 2026-11-08 A (-366d) | 2027-11-23 → 2027-10-21 (-33d) | 0% → 50% | -59.65d → -27.15d |
| 14 | **Curbs and edging** | 2027-11-23 → 2027-10-21 (-33d) | 2027-11-25 → 2027-10-24 (-32d) |  |  |
| CON-LEG101-LR-4800 | Installation of Curbs and edging [Local – 01 Segment-02] | 2027-11-23 → 2027-10-21 (-33d) | 2027-11-25 → 2027-10-24 (-32d) |  | -59.65d → -27.15d |
| 13 | **Landscape** | 2027-11-25 → 2026-11-12 (-378d) | 2027-12-27 → 2027-11-20 (-37d) |  |  |
| CON-LEG101-LR-4590 | Site preparation for Planting Area [Local – 01 Segment-02] | 2027-11-25 → 2026-11-12 A (-378d) | 2027-12-06 → 2027-10-30 (-37d) | 0% → 50% | -59.65d → -27.15d |
| CON-LEG101-LR-4660 | Placing Agricutural Soil [Local – 01 Segment-02] | 2027-12-06 → 2027-10-30 (-37d) | 2027-12-16 → 2027-11-09 (-37d) |  | -59.65d → -27.15d |
| CON-LEG101-LR-4730 | Planting Shrubs And Ground Cover [Local – 01 Segment-02] | 2027-12-16 → 2027-11-09 (-37d) | 2027-12-27 → 2027-11-20 (-37d) |  | -59.65d → -27.15d |
| 3 | **LOCAL - 01 Segment-03 (From 2+133 to 3+200)** |  | 2027-11-13 → 2027-10-28 (-16d) |  |  |
| 2 | **Irrigation Works** |  | 2027-10-10 → 2027-10-05 (-5d) |  |  |
| 1 | **Secondary Irrigation** |  | 2027-10-10 → 2027-10-05 (-5d) |  |  |
| 2 | **Valves and Controller** | 2027-09-19 → 2026-11-09 (-314d) | 2027-10-10 → 2027-09-29 (-11d) |  |  |
| CON-LEG101-LR-5370 | Installation of a Flush valve [Local – 01 Segment-03] | 2027-09-19 → 2026-11-09 A (-314d) | 2027-09-26 → 2027-09-21 (-5d) | 0% → 50% | -21.5d → -8.5d |
| CON-LEG101-LR-5540 | Installation of Decoder cables 12 AWG between valves and controllers [Local – 01 Segment-03] | 2027-09-26 → 2026-11-09 A (-321d) | 2027-10-10 → 2027-09-29 (-11d) | 0% → 50% | -21.5d → -8.5d |
| 14 | **Curbs and edging** | 2027-10-10 → 2027-09-30 (-10d) | 2027-10-12 → 2027-10-02 (-10d) |  |  |
| CON-LEG101-LR-4810 | Installation of Curbs and edging [Local – 01 Segment-03] | 2027-10-10 → 2027-09-30 (-10d) | 2027-10-12 → 2027-10-02 (-10d) |  | -21.5d → -8.5d |
| 13 | **Landscape** | 2027-10-12 → 2026-11-10 (-336d) | 2027-11-13 → 2027-10-28 (-16d) |  |  |
| CON-LEG101-LR-4600 | Site preparation for Planting Area [Local – 01 Segment-03] | 2027-10-12 → 2026-11-10 A (-336d) | 2027-10-23 → 2027-10-07 (-16d) | 0% → 50% | -21.5d → -8.5d |
| CON-LEG101-LR-4670 | Placing Agricutural Soil [Local – 01 Segment-03] | 2027-10-23 → 2027-10-07 (-16d) | 2027-11-02 → 2027-10-18 (-15d) |  | -21.5d → -8.5d |
| CON-LEG101-LR-4740 | Planting Shrubs And Ground Cover [Local – 01 Segment-03] | 2027-11-02 → 2027-10-18 (-15d) | 2027-11-13 → 2027-10-28 (-16d) |  | -21.5d → -8.5d |
| 3 | **Local – 02** |  | 2027-11-18 → 2027-10-28 (-21d) |  |  |
| 3 | **Irrigation Works** |  | 2027-10-25 → 2027-10-07 (-18d) |  |  |
| 1 | **Secondary Irrigation** |  | 2027-10-25 → 2027-10-07 (-18d) |  |  |
| 2 | **Valves and Controller** | 2027-09-19 → 2026-11-11 (-312d) | 2027-10-25 → 2027-10-07 (-18d) |  |  |
| CON-LEG101-LR-5280 | Installation of Electrical Solenoid Valve [Local – 02 ] | 2027-09-19 → 2026-11-11 A (-312d) | 2027-09-26 → 2027-09-21 (-5d) | 0% → 50% | -26.3d → -8.3d |
| CON-LEG101-LR-5320 | Installation of quick coupler valve [Local – 02 ] | 2027-09-26 → 2026-11-11 A (-319d) | 2027-10-02 → 2027-09-26 (-6d) | 0% → 50% | -26.3d → -8.3d |
| CON-LEG101-LR-5380 | Installation of a Flush valve [Local – 02 ] | 2027-10-02 → 2026-11-11 A (-325d) | 2027-10-06 → 2027-09-28 (-8d) | 0% → 50% | -26.3d → -8.3d |
| CON-LEG101-LR-5490 | Install single station decoder for valve connection [Local – 02 ] | 2027-10-06 → 2026-11-11 A (-329d) | 2027-10-14 → 2027-10-02 (-12d) | 0% → 50% | -26.3d → -8.3d |
| CON-LEG101-LR-5550 | Installation of Decoder cables 12 AWG between valves and controllers [Local – 02 ] | 2027-10-14 → 2026-11-11 A (-337d) | 2027-10-25 → 2027-10-07 (-18d) | 0% → 50% | -26.3d → -8.3d |
| 14 | **Curbs and edging** | 2027-10-25 → 2027-10-07 (-18d) | 2027-10-28 → 2027-10-11 (-17d) |  |  |
| CON-LEG101-LR-4830 | Installation of Curbs and edging [Local – 02 ] | 2027-10-25 → 2027-10-07 (-18d) | 2027-10-28 → 2027-10-11 (-17d) |  | -26.3d → -8.3d |
| 13 | **Landscape** | 2027-10-28 → 2026-11-14 (-348d) | 2027-11-18 → 2027-10-28 (-21d) |  |  |
| CON-LEG101-LR-4610 | Site preparation for Planting Area [Local – 02 ] | 2027-10-28 → 2026-11-14 A (-348d) | 2027-11-04 → 2027-10-14 (-21d) | 0% → 50% | -26.3d → -8.3d |
| CON-LEG101-LR-4680 | Placing Agricutural Soil [Local – 02 ] | 2027-11-04 → 2027-10-14 (-21d) | 2027-11-11 → 2027-10-21 (-21d) |  | -26.3d → -8.3d |
| CON-LEG101-LR-4750 | Planting Shrubs And Ground Cover [Local – 02 ] | 2027-11-11 → 2027-10-21 (-21d) | 2027-11-18 → 2027-10-28 (-21d) |  | -26.3d → -8.3d |
| 5 | **Local – 04** | 2027-11-03 → 2027-11-10 (+7d) | 2028-01-05 → 2028-01-12 (+7d) |  |  |
| 2 | **Irrigation Works** | 2027-11-03 → 2027-11-10 (+7d) | 2027-12-22 → 2027-12-29 (+7d) |  |  |
| 1 | **Secondary Irrigation** | 2027-11-03 → 2027-11-10 (+7d) | 2027-12-22 → 2027-12-29 (+7d) |  |  |
| 1 | **Pipe Work** | 2027-11-03 → 2027-11-10 (+7d) | 2027-12-06 → 2027-12-13 (+7d) |  |  |
| CON-LEG101-LR-4910 | Excavation for Secondary Irrigation [Local – 04 ] | 2027-11-03 → 2027-11-10 (+7d) | 2027-11-06 → 2027-11-13 (+7d) |  | -68d → -74d |
| CON-LEG101-LR-4980 | Sand bedding for Secondary Irrigation [Local – 04 ] | 2027-11-07 → 2027-11-14 (+7d) | 2027-11-13 → 2027-11-20 (+7d) |  | -68d → -74d |
| CON-LEG101-LR-5050 | Installation of Pipe for Secondary Irrigation [Local – 04 ] | 2027-11-14 → 2027-11-21 (+7d) | 2027-11-22 → 2027-11-29 (+7d) |  | -68d → -74d |
| CON-LEG101-LR-5120 | Sand Surround for Secondary Irrigation [Local – 04 ] | 2027-11-23 → 2027-11-30 (+7d) | 2027-11-25 → 2027-12-02 (+7d) |  | -68d → -74d |
| CON-LEG101-LR-5190 | Installation of Micron Marker Magnetic Tape [Local – 04 ] | 2027-11-27 → 2027-12-04 (+7d) | 2027-12-01 → 2027-12-08 (+7d) |  | -68d → -74d |
| CON-LEG101-LR-5250 | Backfilling to Subgrade Elevation [Local – 04 ] | 2027-12-02 → 2027-12-09 (+7d) | 2027-12-04 → 2027-12-11 (+7d) |  | -68d → -74d |
| CON-LEG101-LR-5450 | Installation of tubing for risers connections from laterals [Local – 04 ] | 2027-12-05 → 2027-12-12 (+7d) | 2027-12-06 → 2027-12-13 (+7d) |  | -68d → -74d |
| 2 | **Valves and Controller** | 2027-11-23 → 2027-11-30 (+7d) | 2027-12-22 → 2027-12-29 (+7d) |  |  |
| CON-LEG101-LR-5290 | Installation of Electrical Solenoid Valve [Local – 04 ] | 2027-11-23 → 2027-11-30 (+7d) | 2027-11-29 → 2027-12-06 (+7d) |  | -68d → -74d |
| CON-LEG101-LR-5330 | Installation of quick coupler valve [Local – 04 ] | 2027-11-30 → 2027-12-07 (+7d) | 2027-12-06 → 2027-12-13 (+7d) |  | -68d → -74d |
| CON-LEG101-LR-5390 | Installation of a Flush valve [Local – 04 ] | 2027-12-07 → 2027-12-14 (+7d) | 2027-12-12 → 2027-12-19 (+7d) |  | -68d → -74d |
| CON-LEG101-LR-5500 | Install single station decoder for valve connection [Local – 04 ] | 2027-12-13 → 2027-12-20 (+7d) | 2027-12-20 → 2027-12-27 (+7d) |  | -68d → -74d |
| CON-LEG101-LR-5560 | Installation of Decoder cables 12 AWG between valves and controllers [Local – 04 ] | 2027-12-21 → 2027-12-28 (+7d) | 2027-12-22 → 2027-12-29 (+7d) |  | -68d → -74d |
| 14 | **Curbs and edging** | 2027-12-23 → 2027-12-30 (+7d) | 2027-12-26 → 2028-01-02 (+7d) |  |  |
| CON-LEG101-LR-4840 | Installation of Curbs and edging [Local – 04 ] | 2027-12-23 → 2027-12-30 (+7d) | 2027-12-26 → 2028-01-02 (+7d) |  | -68d → -74d |
| 13 | **Landscape** | 2027-12-27 → 2028-01-03 (+7d) | 2028-01-05 → 2028-01-12 (+7d) |  |  |
| CON-LEG101-LR-4620 | Site preparation for Planting Area [Local – 04 ] | 2027-12-27 → 2028-01-03 (+7d) | 2027-12-29 → 2028-01-05 (+7d) |  | -68d → -74d |
| CON-LEG101-LR-4690 | Placing Agricutural Soil [Local – 04 ] | 2027-12-30 → 2028-01-06 (+7d) | 2028-01-02 → 2028-01-09 (+7d) |  | -68d → -74d |
| CON-LEG101-LR-4760 | Planting Shrubs And Ground Cover [Local – 04 ] | 2028-01-03 → 2028-01-10 (+7d) | 2028-01-05 → 2028-01-12 (+7d) |  | -68d → -74d |
| 6 | **Local – 06** |  | 2027-12-23 → 2027-12-12 (-11d) |  |  |
| 2 | **Irrigation Works** |  | 2027-12-06 → 2027-11-27 (-9d) |  |  |
| 1 | **Secondary Irrigation** |  | 2027-12-06 → 2027-11-27 (-9d) |  |  |
| 1 | **Pipe Work** |  | 2027-11-08 → 2027-11-13 (+5d) |  |  |
| CON-LEG101-LR-4920 | Excavation for Secondary Irrigation [Local – 06 ] |  | 2027-11-03 → 2027-11-10 (+7d) | 75% → 85% | -56.25d → -46.55d |
| CON-LEG101-LR-5060 | Installation of Pipe for Secondary Irrigation [Local – 06 ] |  | 2027-11-04 → 2027-11-10 (+6d) | 75% → 85% | -56.25d → -46.55d |
| CON-LEG101-LR-5260 | Backfilling to Subgrade Elevation [Local – 06 ] |  | 2027-11-06 → 2027-11-11 (+5d) | 75% → 85% | -56.25d → -46.55d |
| CON-LEG101-LR-5460 | Installation of tubing for risers connections from laterals [Local – 06 ] |  | 2027-11-08 → 2027-11-13 (+5d) | 75% → 85% | -56.25d → -46.55d |
| 2 | **Valves and Controller** | 2027-11-08 → 2026-11-12 (-361d) | 2027-12-06 → 2027-11-27 (-9d) |  |  |
| CON-LEG101-LR-5300 | Installation of Electrical Solenoid Valve [Local – 06 ] | 2027-11-08 → 2026-11-12 A (-361d) | 2027-11-13 → 2027-11-15 (+2d) | 0% → 50% | -56.25d → -46.55d |
| CON-LEG101-LR-5340 | Installation of quick coupler valve [Local – 06 ] | 2027-11-13 → 2026-11-12 A (-366d) |  | 0% → 50% | -56.25d → -46.55d |
| CON-LEG101-LR-5400 | Installation of a Flush valve [Local – 06 ] | 2027-11-17 → 2026-11-12 A (-370d) | 2027-11-23 → 2027-11-21 (-2d) | 0% → 50% | -56.25d → -46.55d |

| ID | Task | Start | Finish | Complete | Total float |
| --- | --- | --- | --- | --- | --- |
| CON-LEG101-LR-5510 | Install single station decoder for valve connection [Local – 06 ] | 2027-11-23 → 2026-11-12 A (-376d) | 2027-11-29 → 2027-11-23 (-6d) | 0% → 50% | -56.25d → -46.55d |
| CON-LEG101-LR-5570 | Installation of Decoder cables 12 AWG between valves and controllers [Local – 06 ] | 2027-11-29 → 2026-11-12 A (-382d) | 2027-12-06 → 2027-11-27 (-9d) | 0% → 50% | -56.25d → -46.55d |
| 14 | **Curbs and edging** | 2027-12-06 → 2027-11-27 (-9d) | 2027-12-09 → 2027-11-30 (-9d) |  |  |
| CON-LEG101-LR-4850 | Installation of Curbs and edging [Local – 06 ] | 2027-12-06 → 2027-11-27 (-9d) | 2027-12-09 → 2027-11-30 (-9d) |  | -56.25d → -46.55d |
| 13 | **Landscape** | 2027-12-09 → 2026-11-14 (-390d) | 2027-12-23 → 2027-12-12 (-11d) |  |  |
| CON-LEG101-LR-4630 | Site preparation for Planting Area [Local – 06 ] | 2027-12-09 → 2026-11-14 A (-390d) | 2027-12-14 → 2027-12-02 (-12d) | 0% → 50% | -56.25d → -46.55d |
| CON-LEG101-LR-4700 | Placing Agricutural Soil [Local – 06 ] | 2027-12-14 → 2027-12-02 (-12d) | 2027-12-19 → 2027-12-07 (-12d) |  | -56.25d → -46.55d |
| CON-LEG101-LR-4770 | Planting Shrubs And Ground Cover [Local – 06 ] | 2027-12-19 → 2027-12-07 (-12d) | 2027-12-23 → 2027-12-12 (-11d) |  | -56.25d → -46.55d |
| 1 | **Roundabout - 01 (L01 & L04)** |  | 2028-04-08 → 2028-03-06 (-33d) |  |  |
| 1 | **Irrigation Works** |  | 2028-01-18 → 2028-01-04 (-14d) |  |  |
| 1 | **Secondary Irrigation** |  | 2028-01-18 → 2028-01-04 (-14d) |  |  |
| 1 | **Pipe Work** |  | 2027-12-28 → 2028-01-04 (+7d) |  |  |
| CON-LEG101-RA-1120 | Excavation for Secondary Irrigation [Roundabout : 01 ] |  | 2027-11-09 → 2027-11-16 (+7d) |  | -147.5d → -119.5d |
| CON-LEG101-RA-1150 | Sand bedding for Secondary Irrigation [Roundabout : 01 ] |  | 2027-11-15 → 2027-11-22 (+7d) |  | -147.5d → -119.5d |
| CON-LEG101-RA-1180 | Installation of Pipe for Secondary Irrigation [Roundabout : 01 ] |  | 2027-11-22 → 2027-11-29 (+7d) |  | -147.5d → -119.5d |
| CON-LEG101-RA-1210 | Sand Surround for Secondary Irrigation [Roundabout : 01 ] |  | 2027-11-30 → 2027-12-07 (+7d) |  | -118d → -114.5d |
| CON-LEG101-RA-1240 | Installation of Micron Marker Magnetic Tape [Roundabout : 01 ] |  | 2027-12-08 → 2027-12-15 (+7d) |  | -118d → -114.5d |
| CON-LEG101-RA-1270 | Backfilling to Subgrade Elevation [Roundabout : 01 ] |  | 2027-12-16 → 2027-12-23 (+7d) |  | -118d → -114.5d |
| CON-LEG101-RA-1390 | Installation of tubing for risers connections from laterals [Roundabout : 01 ] |  | 2027-12-28 → 2028-01-04 (+7d) |  | -118d → -114.5d |
| 2 | **Valves and Controller** | 2027-11-22 → 2026-11-12 (-375d) | 2028-01-18 → 2027-12-27 (-22d) |  |  |
| A | Catch | 2028-01-02 → 2026-11-12 A (-416d) | 2028-01-18 → 2027-12-27 (-22d) | 0% → 50% | -147.5d → -119.5d |
| CON-LEG101-RA-1300 | Installation of Electrical Solenoid Valve [Roundabout : 01 ] | 2027-11-22 → 2026-11-12 A (-375d) | 2027-11-28 → 2027-12-01 (+3d) | 0% → 50% | -147.5d → -119.5d |
| CON-LEG101-RA-1330 | Installation of quick coupler valve [Roundabout : 01 ] | 2027-11-28 → 2026-11-12 A (-381d) | 2027-12-04 → 2027-12-05 (+1d) | 0% → 50% | -147.5d → -119.5d |
| CON-LEG101-RA-1360 | Installation of a Flush valve [Roundabout : 01 ] | 2027-12-04 → 2026-11-12 A (-387d) | 2027-12-16 → 2027-12-11 (-5d) | 0% → 50% | -147.5d → -119.5d |
| CON-LEG101-RA-1420 | Install single station decoder for valve connection [Roundabout : 01 ] | 2027-12-16 → 2026-11-12 A (-399d) | 2028-01-02 → 2027-12-19 (-14d) | 0% → 50% | -147.5d → -119.5d |
| 3 | **Curbs and edging** | 2028-01-18 → 2027-12-28 (-21d) | 2028-02-01 → 2028-01-10 (-22d) |  |  |
| CON-LEG101-RA-1090 | Installation of Curbs and edging [Roundabout : 01 ] | 2028-01-18 → 2027-12-28 (-21d) | 2028-02-01 → 2028-01-10 (-22d) |  | -147.5d → -119.5d |
| 2 | **Landscape** | 2028-02-01 → 2026-11-14 (-444d) | 2028-04-08 → 2028-03-06 (-33d) |  |  |
| CON-LEG101-RA-1000 | Site preparation for Planting Area [Roundabout : 01 ] | 2028-02-01 → 2026-11-14 A (-444d) | 2028-02-23 → 2028-01-22 (-32d) | 0% → 50% | -147.5d → -119.5d |
| CON-LEG101-RA-1030 | Placing Agricutural Soil [Roundabout : 01 ] | 2028-02-23 → 2028-01-22 (-32d) | 2028-03-16 → 2028-02-13 (-32d) |  | -147.5d → -119.5d |
| CON-LEG101-RA-1060 | Planting Shrubs And Ground Cover [Roundabout : 01 ] | 2028-03-16 → 2028-02-13 (-32d) | 2028-04-08 → 2028-03-06 (-33d) |  | -147.5d → -119.5d |
| 4 | **Roundabout - 02 (L01 & L03)** |  | 2028-03-25 → 2028-02-14 (-40d) |  |  |
| 1 | **Irrigation Works** |  | 2028-02-15 → 2028-01-12 (-34d) |  |  |
| 1 | **Secondary Irrigation** |  | 2028-02-15 → 2028-01-12 (-34d) |  |  |
| 1 | **Pipe Work** |  | 2028-01-19 → 2028-01-03 (-16d) |  |  |
| CON-LEG101-RA-1130 | Excavation for Secondary Irrigation [Roundabout : 02 ] |  | 2027-12-20 → 2027-12-14 (-6d) | 70% → 80% | -135.4d → -101.6d |
| CON-LEG101-RA-1160 | Sand bedding for Secondary Irrigation [Roundabout : 02 ] |  | 2027-12-25 → 2027-12-16 (-9d) | 70% → 80% | -135.4d → -101.6d |
| CON-LEG101-RA-1190 | Installation of Pipe for Secondary Irrigation [Roundabout : 02 ] |  | 2027-12-28 → 2027-12-19 (-9d) | 70% → 80% | -135.4d → -101.6d |
| CON-LEG101-RA-1220 | Sand Surround for Secondary Irrigation [Roundabout : 02 ] |  | 2028-01-02 → 2027-12-22 (-11d) | 70% → 80% | -79.3d → -65.2d |
| CON-LEG101-RA-1250 | Installation of Micron Marker Magnetic Tape [Roundabout : 02 ] |  | 2028-01-06 → 2027-12-26 (-11d) | 70% → 80% | -79.3d → -65.2d |
| CON-LEG101-RA-1280 | Backfilling to Subgrade Elevation [Roundabout : 02 ] |  | 2028-01-11 → 2027-12-28 (-14d) | 70% → 80% | -79.3d → -65.2d |
| CON-LEG101-RA-1400 | Installation of tubing for risers connections from laterals [Roundabout : 02 ] |  | 2028-01-19 → 2028-01-03 (-16d) | 70% → 80% | -79.3d → -65.2d |
| 2 | **Valves and Controller** | 2027-12-28 → 2026-11-12 (-411d) | 2028-02-15 → 2028-01-12 (-34d) |  |  |
| CON-LEG101-RA-1310 | Installation of Electrical Solenoid Valve [Roundabout : 02 ] | 2027-12-28 → 2026-11-12 A (-411d) | 2028-01-03 → 2027-12-22 (-12d) | 0% → 50% | -135.4d → -101.6d |
| CON-LEG101-RA-1340 | Installation of quick coupler valve [Roundabout : 02 ] | 2028-01-03 → 2026-11-12 A (-417d) | 2028-01-09 → 2027-12-25 (-15d) | 0% → 50% | -135.4d → -101.6d |
| CON-LEG101-RA-1370 | Installation of a Flush valve [Roundabout : 02 ] | 2028-01-09 → 2026-11-12 A (-423d) | 2028-01-22 → 2028-01-01 (-21d) | 0% → 50% | -135.4d → -101.6d |
| CON-LEG101-RA-1430 | Install single station decoder for valve connection [Roundabout : 02 ] | 2028-01-22 → 2026-11-12 A (-436d) | 2028-01-30 → 2028-01-04 (-26d) | 0% → 50% | -135.4d → -101.6d |
| CON-LEG101-RA-1460 | Installation of Decoder cables 12 AWG between valves and controllers [Roundabout : 02 ] | 2028-01-30 → 2026-11-12 A (-444d) | 2028-02-15 → 2028-01-12 (-34d) | 0% → 50% | -135.4d → -101.6d |
| 3 | **Curbs and edging** | 2028-02-15 → 2028-01-12 (-34d) | 2028-02-19 → 2028-01-16 (-34d) |  |  |
| CON-LEG101-RA-1100 | Installation of Curbs and edging [Roundabout : 02 ] | 2028-02-15 → 2028-01-12 (-34d) | 2028-02-19 → 2028-01-16 (-34d) |  | -135.4d → -101.6d |
| 2 | **Landscape** | 2028-02-19 → 2026-11-14 (-462d) | 2028-03-25 → 2028-02-14 (-40d) |  |  |
| CON-LEG101-RA-1010 | Site preparation for Planting Area [Roundabout : 02 ] | 2028-02-19 → 2026-11-14 A (-462d) | 2028-03-01 → 2028-01-22 (-39d) | 0% → 50% | -135.4d → -101.6d |
| CON-LEG101-RA-1040 | Placing Agricutural Soil [Roundabout : 02 ] | 2028-03-01 → 2028-01-22 (-39d) | 2028-03-13 → 2028-02-02 (-40d) |  | -135.4d → -101.6d |
| CON-LEG101-RA-1070 | Planting Shrubs And Ground Cover [Roundabout : 02 ] | 2028-03-13 → 2028-02-02 (-40d) | 2028-03-25 → 2028-02-14 (-40d) |  | -135.4d → -101.6d |
| 2 | **Roundabout - 03 (L03 & L05)** |  | 2028-03-14 → 2028-02-08 (-35d) |  |  |
| 1 | **Irrigation Works** |  | 2028-02-16 → 2028-01-17 (-30d) |  |  |
| 1 | **Secondary Irrigation** |  | 2028-02-16 → 2028-01-17 (-30d) |  |  |
| 1 | **Pipe Work** |  | 2028-01-13 → 2028-01-08 (-5d) |  |  |
| CON-LEG101-RA-1140 | Excavation for Secondary Irrigation [Roundabout : 03 ] |  | 2027-12-23 → 2027-12-16 (-7d) |  | -126.8d → -96.7d |
| CON-LEG101-RA-1170 | Sand bedding for Secondary Irrigation [Roundabout : 03 ] |  | 2027-12-27 → 2027-12-20 (-7d) |  | -126.8d → -96.7d |
| CON-LEG101-RA-1200 | Installation of Pipe for Secondary Irrigation [Roundabout : 03 ] |  | 2027-12-29 → 2027-12-23 (-6d) |  | -126.8d → -96.7d |
| CON-LEG101-RA-1230 | Sand Surround for Secondary Irrigation [Roundabout : 03 ] |  | 2028-01-02 → 2027-12-26 (-7d) |  | -74.8d → -69.2d |
| CON-LEG101-RA-1260 | Installation of Micron Marker Magnetic Tape [Roundabout : 03 ] |  | 2028-01-05 → 2027-12-29 (-7d) |  | -74.8d → -69.2d |
| CON-LEG101-RA-1290 | Backfilling to Subgrade Elevation [Roundabout : 03 ] |  | 2028-01-09 → 2028-01-02 (-7d) |  | -74.8d → -69.2d |
| CON-LEG101-RA-1410 | Installation of tubing for risers connections from laterals [Roundabout : 03 ] |  | 2028-01-13 → 2028-01-08 (-5d) |  | -74.8d → -69.2d |
| 2 | **Valves and Controller** | 2027-12-29 → 2026-11-14 (-410d) | 2028-02-16 → 2028-01-17 (-30d) |  |  |
| CON-LEG101-RA-1320 | Installation of Electrical Solenoid Valve [Roundabout : 03 ] | 2027-12-29 → 2026-11-14 A (-410d) | 2028-01-04 → 2027-12-26 (-9d) | 0% → 50% | -126.8d → -96.7d |
| CON-LEG101-RA-1350 | Installation of quick coupler valve [Roundabout : 03 ] | 2028-01-04 → 2026-11-14 A (-416d) | 2028-01-10 → 2027-12-29 (-12d) | 0% → 50% | -126.8d → -96.7d |
| CON-LEG101-RA-1380 | Installation of a Flush valve [Roundabout : 03 ] | 2028-01-10 → 2026-11-14 A (-422d) | 2028-01-23 → 2028-01-04 (-19d) | 0% → 50% | -126.8d → -96.7d |
| CON-LEG101-RA-1440 | Install single station decoder for valve connection [Roundabout : 03 ] | 2028-01-23 → 2026-11-14 A (-435d) | 2028-01-31 → 2028-01-09 (-22d) | 0% → 50% | -126.8d → -96.7d |

| ID | Task | Start | Finish | Complete | Total float |
| --- | --- | --- | --- | --- | --- |
| CON-LEG101-RA-1470 | Installation of Decoder cables 12 AWG between valves and controllers [Roundabout : 03 ] | 2028-01-31 → 2026-11-14 A (-443d) | 2028-02-16 → 2028-01-17 (-30d) | 0% → 50% | -126.8d → -96.7d |
| 3 | **Curbs and edging** | 2028-02-16 → 2028-01-17 (-30d) | 2028-02-20 → 2028-01-20 (-31d) |  |  |
| CON-LEG101-RA-1110 | Installation of Curbs and edging [Roundabout : 03 ] | 2028-02-16 → 2028-01-17 (-30d) | 2028-02-20 → 2028-01-20 (-31d) |  | -126.8d → -96.7d |
| 2 | **Landscape** | 2028-02-20 → 2026-11-15 (-462d) | 2028-03-14 → 2028-02-08 (-35d) |  |  |
| CON-LEG101-RA-1020 | Site preparation for Planting Area [Roundabout : 03 ] | 2028-02-20 → 2026-11-15 A (-462d) | 2028-02-28 → 2028-01-24 (-35d) | 0% → 50% | -126.8d → -96.7d |
| CON-LEG101-RA-1050 | Placing Agricutural Soil [Roundabout : 03 ] | 2028-02-28 → 2028-01-24 (-35d) | 2028-03-06 → 2028-01-31 (-35d) |  | -126.8d → -96.7d |
| CON-LEG101-RA-1080 | Planting Shrubs And Ground Cover [Roundabout : 03 ] | 2028-03-06 → 2028-01-31 (-35d) | 2028-03-14 → 2028-02-08 (-35d) |  | -126.8d → -96.7d |
| 6 | **Testing & Commissioning** |  | 2028-04-16 → 2028-03-14 (-33d) |  |  |
| CON-LEG101-TC-1020 | Test for Public Water Utility Distribution |  | 2028-01-03 → 2028-01-10 (+7d) |  | -101d → -107d |
| CON-LEG101-TC-1030 | Test for TSE Network |  | 2028-01-17 → 2028-01-24 (+7d) |  | -92.4d → -98.4d |
| CON-LEG101-TC-1040 | Test for Sanitary Sewerage |  | 2028-01-04 → 2028-01-11 (+7d) |  | -97.4d → -103.4d |
| CON-LEG101-TC-1050 | Test for Stormwater Utilities |  | 2028-01-06 → 2028-01-13 (+7d) |  | -97.4d → -103.4d |
| CON-LEG101-TC-1060 | Test for Bridge Work |  | 2028-01-10 → 2028-01-17 (+7d) |  | -92.4d → -98.4d |
| CON-LEG101-TC-1000 | Test for Telecommunications Work |  | 2028-01-26 → 2028-02-02 (+7d) |  | -88.2d → -94.2d |
| CON-LEG101-TC-1010 | Test for Electrical Network |  | 2028-01-15 → 2028-01-22 (+7d) |  | -92.4d → -98.4d |
| CON-LEG101-TC-1070 | Test for CCTV feeding system and GSM |  | 2028-01-30 → 2028-02-06 (+7d) |  | -86d → -92d |
| CON-LEG101-TC-1100 | Test for Road Lighting |  | 2028-01-20 → 2028-01-27 (+7d) |  | -88.2d → -94.2d |
| CON-LEG101-TC-1110 | Test for Road Works |  | 2028-01-02 → 2028-01-09 (+7d) |  | -109.4d → -115.4d |
| CON-LEG101-TC-1120 | Test for Earthing System |  | 2028-02-03 → 2028-02-10 (+7d) |  | -86d → -92d |
| CON-LEG101-TC-1090 | Test for Irrigation and Landscape | 2028-04-08 → 2028-03-06 (-33d) | 2028-04-16 → 2028-03-14 (-33d) |  | -147.5d → -119.5d |
| 7 | **Project Close-out** |  | 2028-05-09 → 2028-04-06 (-33d) |  |  |
| 1 | **As-Built DWGs** |  | 2028-04-27 → 2028-03-26 (-32d) |  |  |
| 1 | **As-Built DWGs Submittal** |  | 2028-04-22 → 2028-03-20 (-33d) |  |  |
| CON-LEG101-ABS-1110 | As-Built DWGs Submittal for Road Works | 2028-01-02 → 2028-01-09 (+7d) | 2028-01-16 → 2028-01-23 (+7d) |  | -109.4d → -115.4d |
| CON-LEG101-ABS-1020 | As-Built DWGs Submittal for Public Water Utility Distribution | 2028-01-04 → 2028-01-11 (+7d) | 2028-01-17 → 2028-01-24 (+7d) |  | -101d → -107d |
| CON-LEG101-ABS-1050 | As-Built DWGs Submittal for Stormwater Utilities | 2028-01-06 → 2028-01-13 (+7d) | 2028-01-20 → 2028-01-27 (+7d) |  | -97.4d → -103.4d |
| CON-LEG101-ABS-1060 | As-Built DWGs Submittal for Bridge Work | 2028-01-10 → 2028-01-17 (+7d) | 2028-01-24 → 2028-01-31 (+7d) |  | -86.2d → -92.2d |
| CON-LEG101-ABS-1030 | As-Built DWGs Submittal for TSE Network | 2028-01-17 → 2028-01-24 (+7d) | 2028-01-31 → 2028-02-07 (+7d) |  | -92.4d → -98.4d |
| CON-LEG101-ABS-1040 | As-Built DWGs Submittal for Sanitary Sewerage | 2028-01-20 → 2028-01-27 (+7d) | 2028-02-03 → 2028-02-10 (+7d) |  | -97.4d → -103.4d |
| CON-LEG101-ABS-1100 | As-Built DWGs Submittal for Road Lighting | 2028-01-22 → 2028-01-29 (+7d) | 2028-02-03 → 2028-02-10 (+7d) |  | -86d → -92d |
| CON-LEG101-ABS-1000 | As-Built DWGs Submittal for Telecommunications Work | 2028-01-26 → 2028-02-02 (+7d) | 2028-02-09 → 2028-02-16 (+7d) |  | -88.2d → -94.2d |
| CON-LEG101-ABS-1070 | As-Built DWGs Submittal for CCTV feeding system and GSM | 2028-01-30 → 2028-02-06 (+7d) | 2028-02-08 → 2028-02-15 (+7d) |  | -84.8d → -90.8d |
| CON-LEG101-ABS-1010 | As-Built DWGs Submittal for Electrical Network | 2028-02-03 → 2028-02-10 (+7d) | 2028-02-17 → 2028-02-24 (+7d) |  | -97.4d → -103.4d |
| CON-LEG101-ABS-1120 | As-Built DWGs Submittal for Earthing System | 2028-02-05 → 2028-02-12 (+7d) | 2028-02-09 → 2028-02-16 (+7d) |  | -86d → -92d |
| CON-LEG101-ABS-1090 | As-Built DWGs Submittal for Irrigation and Landscape | 2028-04-16 → 2028-03-14 (-33d) | 2028-04-22 → 2028-03-20 (-33d) |  | -147.5d → -119.5d |
| 2 | **As-Built DWGs Approval** |  | 2028-04-27 → 2028-03-26 (-32d) |  |  |
| CON-LEG101-ABA-1110 | As- Built DWGs Approval for Road Works | 2028-01-16 → 2028-01-23 (+7d) | 2028-01-27 → 2028-02-03 (+7d) |  | -109.4d → -115.4d |
| CON-LEG101-ABA-1020 | As- Built DWGs Approval for Public Water Utility Distribution | 2028-01-27 → 2028-02-03 (+7d) | 2028-02-08 → 2028-02-15 (+7d) |  | -109.4d → -115.4d |
| CON-LEG101-ABA-1030 | As- Built DWGs Approval for TSE Network | 2028-01-31 → 2028-02-07 (+7d) | 2028-02-12 → 2028-02-19 (+7d) |  | -92.4d → -98.4d |
| CON-LEG101-ABA-1100 | As- Built DWGs Approval for Road Lighting | 2028-02-05 → 2028-02-12 (+7d) | 2028-02-15 → 2028-02-22 (+7d) |  | -86d → -92d |
| CON-LEG101-ABA-1050 | As- Built DWGs Approval for Stormwater Utilities | 2028-02-08 → 2028-02-15 (+7d) | 2028-02-20 → 2028-02-27 (+7d) |  | -109.4d → -115.4d |
| CON-LEG101-ABA-1070 | As- Built DWGs Approval for CCTV feeding system and GSM | 2028-02-08 → 2028-02-15 (+7d) | 2028-02-14 → 2028-02-21 (+7d) |  | -84.8d → -90.8d |
| CON-LEG101-ABA-1000 | As- Built DWGs Approval for Telecommunications Work | 2028-02-09 → 2028-02-16 (+7d) | 2028-02-19 → 2028-02-26 (+7d) |  | -88.2d → -94.2d |
| CON-LEG101-ABA-1120 | As- Built DWGs Approval for Earthing System | 2028-02-10 → 2028-02-17 (+7d) | 2028-02-15 → 2028-02-22 (+7d) |  | -86d → -92d |
| CON-LEG101-ABA-1060 | As- Built DWGs Approval for Bridge Work | 2028-02-20 → 2028-02-27 (+7d) | 2028-03-02 → 2028-03-09 (+7d) |  | -109.4d → -115.4d |
| CON-LEG101-ABA-1010 | As- Built DWGs Approval for Electrical Network | 2028-03-02 → 2028-03-09 (+7d) | 2028-03-14 → 2028-03-21 (+7d) |  | -109.4d → -115.4d |
| CON-LEG101-ABA-1040 | As- Built DWGs Approval for Sanitary Sewerage | 2028-03-02 → 2028-03-09 (+7d) | 2028-03-14 → 2028-03-21 (+7d) |  | -109.4d → -115.4d |
| CON-LEG101-ABA-1090 | As- Built DWGs Approval for Irrigation and Landscape | 2028-04-22 → 2028-03-20 (-33d) | 2028-04-27 → 2028-03-26 (-32d) |  | -147.5d → -119.5d |
| 2 | **Demobilization** | 2028-04-27 → 2028-03-26 (-32d) | 2028-05-09 → 2028-04-06 (-33d) |  |  |
| CON-LEG101-DM-1000 | Demobilization of Manpower | 2028-04-27 → 2028-03-26 (-32d) | 2028-05-03 → 2028-04-01 (-32d) |  | -147.5d → -119.5d |
| CON-LEG101-DM-1010 | Removal of Equipment from Site | 2028-04-27 → 2028-03-26 (-32d) | 2028-05-03 → 2028-04-01 (-32d) |  | -147.5d → -119.5d |
| CON-LEG101-DM-1020 | Site Clean Up | 2028-04-27 → 2028-03-26 (-32d) | 2028-05-03 → 2028-04-01 (-32d) |  | -147.5d → -119.5d |
| CON-LEG101-DM-1030 | Removal of Site Offices and Structures | 2028-04-27 → 2028-03-26 (-32d) | 2028-05-03 → 2028-04-01 (-32d) |  | -147.5d → -119.5d |
| CON-LEG101-DM-1040 | Restoration of Ground Surfaces | 2028-05-03 → 2028-04-01 (-32d) | 2028-05-09 → 2028-04-06 (-33d) |  | -147.5d → -119.5d |

## Version 9 (data date 2026-11-24, saved 2026-11-24, file 02. JDH1-02-003 -ENJ-WPR-053-24-11-2026 Update Schedule.xer)

Last finish 2028-04-06 → 2028-04-09 (+3d). Complete tasks 1375 → 1386.

Changed:

| ID | Task | Start | Finish | Complete | Total float |
| --- | --- | --- | --- | --- | --- |
| 5 | **Milestones** |  | 2028-04-06 → 2028-04-09 (+3d) |  |  |
| 1 | **Key Milestones** |  | 2028-04-06 → 2028-04-09 (+3d) |  |  |
| CON-LEG101-MS-1000 | Project Completion Date | 2028-04-06 → 2028-04-09 (+3d) | 2028-04-06 → 2028-04-09 (+3d) |  | -119.5d → -121.4d |
| 2 | **Contractual Milestone** |  | 2028-04-06 → 2028-04-09 (+3d) |  |  |
| 4 | **Engineering** | 2026-12-05 → 2026-12-12 (+7d) | 2026-12-05 → 2026-12-12 (+7d) |  |  |
| CON-LEG101-MS-1060 | Finish Submission and Approval for Shop Drawings, Method of Statement, Prequalification and Materials | 2026-12-05 → 2026-12-12 (+7d) | 2026-12-05 → 2026-12-12 (+7d) |  | -17.5d → -19.4d |
| 1 | **Procurement** | 2026-11-29 → 2026-12-06 (+7d) | 2026-11-29 → 2026-12-06 (+7d) |  |  |
| CON-LEG101-MS-1100 | Finish PO for Short Lead Item & Long Lead Item | 2026-11-29 → 2026-12-06 (+7d) | 2026-11-29 → 2026-12-06 (+7d) |  | -11.7d → -13.6d |
| 5 | **Construction** | 2027-02-20 → 2027-02-28 (+8d) | 2028-04-06 → 2028-04-09 (+3d) |  |  |
| CON-LEG101-MS-1130 | Completion of Deep infrastructure network | 2027-02-20 → 2027-02-28 (+8d) | 2027-02-20 → 2027-02-28 (+8d) |  | 85.45d → 80.05d |
| CON-LEG101-MS-1120 | Completion of Roads & Meduim Voltage | 2027-07-17 → 2027-07-24 (+7d) | 2027-07-17 → 2027-07-24 (+7d) |  | -59.85d → -64.65d |
| CON-LEG101-MS-1140 | Completion of Shallow infrastructure network | 2027-10-31 → 2027-11-07 (+7d) | 2027-10-31 → 2027-11-07 (+7d) |  | -58.4d → -64.4d |
| CON-LEG101-MS-1150 | Completion all Works | 2028-04-06 → 2028-04-09 (+3d) | 2028-04-06 → 2028-04-09 (+3d) |  | -119.5d → -121.4d |
| 6 | **Monitoring and Control Milestone** | 2027-07-18 → 2027-07-25 (+7d) | 2028-03-06 → 2028-02-26 (-9d) |  |  |
| CON-LEG101-MS-1050 | Completion of Outside Boundary Area's Scope (Tie-in Lines) | 2027-07-18 → 2027-07-25 (+7d) | 2027-07-18 → 2027-07-25 (+7d) |  | -0.82d → -6.82d |
| CON-LEG101-MS-1020 | Completion of Bridge | 2027-09-05 → 2027-09-04 (-1d) | 2027-09-05 → 2027-09-04 (-1d) |  | -43d → -42d |
| CON-LEG101-MS-1040 | Completion of Fence and Gate | 2027-12-12 → 2027-12-11 (-1d) | 2027-12-12 → 2027-12-11 (-1d) |  | -43d → -42d |
| CON-LEG101-MS-1010 | Completion of Roads Finishing | 2028-01-05 → 2028-01-12 (+7d) | 2028-01-05 → 2028-01-12 (+7d) |  | -115.4d → -121.4d |
| CON-LEG101-MS-1030 | Completion of Roundabout & Landscape works | 2028-03-06 → 2028-02-26 (-9d) | 2028-03-06 → 2028-02-26 (-9d) |  | -119.5d → -112d |
| 3 | **Engineering** |  | 2026-12-05 → 2026-12-12 (+7d) |  |  |
| 2 | **Shop Drawings** |  | 2026-12-05 → 2026-12-12 (+7d) |  |  |
| 1 | **Shop Drawings Submittal** |  | 2026-11-28 → 2026-12-05 (+7d) |  |  |
| 2 | **Shop Drawings Submittal for Electrical Network** |  | 2026-11-28 → 2026-12-05 (+7d) |  |  |
| CON-LEG101-EN-1390 | Shop DWG Submittal for Medium Voltage Network | 2026-11-18 → 2026-11-25 (+7d) | 2026-11-28 → 2026-12-05 (+7d) |  | -17.5d → -19.4d |
| 2 | **Shop Drawings Approval** |  | 2026-12-05 → 2026-12-12 (+7d) |  |  |
| 2 | **Shop Drawings Approval for Electrical Network** |  | 2026-12-05 → 2026-12-12 (+7d) |  |  |
| CON-LEG101-EN-1660 | Shop DWG Approval for Medium Voltage Network | 2026-11-29 → 2026-12-06 (+7d) | 2026-12-05 → 2026-12-12 (+7d) |  | -17.5d → -19.4d |
| 4 | **Pre-qualification and Material** |  | 2026-11-23 → 2026-11-30 (+7d) |  |  |
| 4 | **Electrical Network** |  | 2026-11-23 → 2026-11-30 (+7d) |  |  |
| 13 | **Ring Main Unit** |  | 2026-11-23 → 2026-11-30 (+7d) |  |  |
| CON-LEG101-SB-1710 | Pre-qualification and Material Approval for Ring Main Unit |  | 2026-11-23 → 2026-11-30 (+7d) |  | -11.7d → -13.6d |
| 14 | **Street Lighting Sub-station** |  | 2026-11-23 → 2026-11-30 (+7d) |  |  |
| CON-LEG101-SB-1750 | Pre-qualification and Material Approval for Street Lighting Sub-station |  | 2026-11-23 → 2026-11-30 (+7d) |  | -6.7d → -8.6d |
| 4 | **Procurement** |  | 2027-08-22 → 2027-08-28 (+6d) |  |  |
| 2 | **Short Lead Item** |  | 2027-08-22 → 2027-08-28 (+6d) |  |  |
| 1 | **Road Works - Civil** |  | 2027-08-22 → 2027-08-28 (+6d) |  |  |
| 6 | **Bituminous Base & Wearing Course** |  | 2027-08-22 → 2027-08-28 (+6d) |  |  |
| CON-LEG101-PR-1530 | Material Delivery for Wearing Course |  | 2027-08-22 → 2027-08-28 (+6d) |  | -56.25d → -61.05d |
| 1 | **Long Lead Item** |  | 2027-07-10 → 2027-07-17 (+7d) |  |  |
| 10 | **Fence & Gates** |  | 2027-02-25 → 2027-03-04 (+7d) |  |  |
| 2 | **Gates** |  | 2027-02-25 → 2027-03-04 (+7d) |  |  |
| CON-LEG101-PR-2040 | Material Fabrication for Gates |  | 2027-01-21 → 2027-01-28 (+7d) |  | 30.5d → 31d |
| CON-LEG101-PR-2050 | Material Delivery for Gates | 2027-01-23 → 2027-01-30 (+7d) | 2027-02-08 → 2027-02-20 (+12d) |  | 30.5d → 31d |
| CON-LEG101-PR-2090 | Staging Time for Gates | 2027-02-14 → 2027-02-21 (+7d) | 2027-02-25 → 2027-03-04 (+7d) |  | 30.5d → 31d |
| 1 | **Electrical Network** |  | 2027-07-10 → 2027-07-17 (+7d) |  |  |
| 12 | **Cable Termination & Joints** |  | 2027-04-20 → 2027-04-27 (+7d) |  |  |
| CON-LEG101-PR-1240 | PO for Cable Termination & Joints |  | 2026-11-23 → 2026-11-30 (+7d) |  | -87.5d → -89.4d |
| CON-LEG101-PR-1270 | Material Fabrication for Cable Termination & Joints | 2026-11-24 → 2026-12-01 (+7d) | 2027-03-14 → 2027-03-21 (+7d) |  | -87.5d → -89.4d |
| CON-LEG101-PR-1300 | Material Delivery for Cable Termination & Joints | 2027-03-15 → 2027-03-22 (+7d) | 2027-03-31 → 2027-04-07 (+7d) |  | -87.5d → -89.4d |
| CON-LEG101-PR-1450 | Stagging Time for Cable Termination & Joints | 2027-04-10 → 2027-04-17 (+7d) | 2027-04-20 → 2027-04-27 (+7d) |  | -94.5d → -96.4d |
| 1 | **Medium Voltage Cable** |  | 2027-04-08 → 2027-04-15 (+7d) |  |  |
| CON-LEG101-PR-1000 | PO for Medium Voltage Cable |  | 2026-11-23 → 2026-11-30 (+7d) |  | -102.5d → -104.4d |
| CON-LEG101-PR-1080 | Material Fabrication for Medium Voltage Cable | 2026-12-14 → 2026-12-21 (+7d) | 2027-02-27 → 2027-03-06 (+7d) |  | -119.5d → -121.4d |
| CON-LEG101-PR-1160 | Material Delivery for Medium Voltage Cable | 2027-03-06 → 2027-03-13 (+7d) | 2027-03-22 → 2027-03-29 (+7d) |  | -119.5d → -121.4d |
| CON-LEG101-PR-1880 | Staging Time for Medium Voltage Cable | 2027-03-23 → 2027-03-30 (+7d) | 2027-04-08 → 2027-04-15 (+7d) |  | -119.5d → -121.4d |
| 4 | **Street Lighting Sub-station** |  | 2027-06-10 → 2027-06-17 (+7d) |  |  |
| CON-LEG101-PR-1090 | Material Fabrication for Street Lighting Sub-station | 2027-02-28 → 2027-03-07 (+7d) | 2027-05-08 → 2027-05-19 (+11d) |  | -55.5d → -55d |
| CON-LEG101-PR-1170 | Material Delivery for Street Lighting Sub-station | 2027-05-09 → 2027-05-20 (+11d) | 2027-05-30 → 2027-06-06 (+7d) |  | -55.5d → -55d |
| CON-LEG101-PR-1890 | Staging Time for Street Lighting Sub-station | 2027-05-31 → 2027-06-07 (+7d) | 2027-06-10 → 2027-06-17 (+7d) |  | -55.5d → -55d |
| 2 | **Ring Main Unit** | 2026-11-23 → 2026-11-30 (+7d) | 2027-07-10 → 2027-07-17 (+7d) |  |  |
| CON-LEG101-PR-2480 | PO for Ring Main Unit | 2026-11-23 → 2026-11-30 (+7d) | 2026-11-29 → 2026-12-06 (+7d) |  | -11.7d → -13.6d |
| CON-LEG101-PR-2490 | Material Fabrication for Ring Main Unit | 2027-02-15 → 2027-02-23 (+8d) | 2027-05-08 → 2027-05-19 (+11d) |  | -30.5d → -30d |
| CON-LEG101-PR-2500 | Material Delivery for Ring Main Unit | 2027-06-12 → 2027-06-19 (+7d) | 2027-06-28 → 2027-07-05 (+7d) |  | -55.5d → -55d |
| CON-LEG101-PR-2510 | Staging Time for Ring Main Unit | 2027-06-29 → 2027-07-06 (+7d) | 2027-07-10 → 2027-07-17 (+7d) |  | -55.5d → -55d |
| 6 | **Landscape Works** |  | 2027-06-28 → 2027-04-07 (-82d) |  |  |
| 8 | **Shrubs And Ground Cover** |  | 2027-06-28 → 2027-04-07 (-82d) |  |  |
| CON-LEG101-PR-3000 | Material Delivery for agricultural soil | 2027-02-28 → 2026-11-18 A (-102d) | 2027-06-16 → 2027-03-27 (-81d) | 0% → 80% | 75d → 141d |
| CON-LEG101-PR-3060 | Staging Time for agricultural soil | 2027-06-17 → 2027-03-28 (-81d) | 2027-06-28 → 2027-04-07 (-82d) |  | 75d → 141d |
| 1 | **Construction** |  | 2028-03-06 → 2028-02-26 (-9d) |  |  |
| 1 | **Roads & Meduim Voltage** |  | 2027-07-17 → 2027-07-24 (+7d) |  |  |

| ID | Task | Start | Finish | Total float |
| --- | --- | --- | --- | --- |
| 1 | **Local – 01** |  | 2027-06-30 → 2027-07-07 (+7d) |  |
| 1 | **LOCAL - 01 Segment-01 (From 0+000 to 1+066)** |  | 2027-05-12 → 2027-05-24 (+12d) |  |
| 8 | **Electrical Works** |  | 2027-05-12 → 2027-05-24 (+12d) |  |
| CON-LEG101-LR-15000 | Approval of Subcontractor / Supplier / Consultant for Medium Voltage from SEC | 2026-11-18 → 2026-11-25 (+7d) | 2026-11-29 → 2026-12-06 (+7d) | -119.5d → -121.4d |
| CON-LEG101-LR-15010 | Approval Materials of Medium Voltage from SEC | 2026-11-30 → 2026-12-07 (+7d) | 2026-12-10 → 2026-12-17 (+7d) | -119.5d → -121.4d |
| CON-LEG101-LR-15030 | PO for Medium Voltage | 2026-12-12 → 2026-12-19 (+7d) | 2026-12-13 → 2026-12-20 (+7d) | -119.5d → -121.4d |
| CON-LEG101-LR-15020 | Testing Materials of Medium Voltage from SEC | 2027-02-28 → 2027-03-07 (+7d) | 2027-03-04 → 2027-03-11 (+7d) | -119.5d → -121.4d |
| 2 | **Medium Voltage** |  | 2027-05-12 → 2027-05-24 (+12d) |  |
| CON-LEG101-LR-6880 | Excavation for Medium Voltage trench [Local – 01 Segment-01] | 2027-04-10 → 2027-04-17 (+7d) | 2027-04-17 → 2027-04-24 (+7d) | -119.5d → -121.4d |
| CON-LEG101-LR-7060 | Installation of Medium Voltage Cables [Local – 01 Segment-01] | 2027-04-18 → 2027-04-25 (+7d) | 2027-04-25 → 2027-05-02 (+7d) | -45.85d → -50.65d |
| CON-LEG101-LR-7150 | Installation of Straight joints cables [Local – 01 Segment-01] | 2027-04-26 → 2027-05-03 (+7d) | 2027-04-27 → 2027-05-04 (+7d) | -45.85d → -50.65d |
| CON-LEG101-LR-7240 | Installation of Cable Termination for 13.8 kv 3Cx 500 mm², Al /XLPE/LLDPE [Local – 01 Segment-01] | 2027-04-28 → 2027-05-05 (+7d) | 2027-05-01 → 2027-05-08 (+7d) | -45.85d → -50.65d |
| CON-LEG101-LR-7330 | Installation of Medium Voltage Switchgears [Local – 01 Segment-01] | 2027-05-02 → 2027-05-09 (+7d) | 2027-05-09 → 2027-05-20 (+11d) | -45.85d → -50.65d |
| CON-LEG101-LR-7680 | Installation of Cable Termination [Local – 01 Segment-01] | 2027-05-10 → 2027-05-22 (+12d) | 2027-05-12 → 2027-05-24 (+12d) | -45.85d → -50.65d |
| 2 | **LOCAL - 01 Segment-02 (From 1+066 to 2+133)** |  | 2027-06-03 → 2027-06-10 (+7d) |  |
| 8 | **Electrical Works** |  | 2027-06-03 → 2027-06-10 (+7d) |  |
| 2 | **Medium Voltage** |  | 2027-06-03 → 2027-06-10 (+7d) |  |
| CON-LEG101-LR-6890 | Excavation for Medium Voltage trench [Local – 01 Segment-02] | 2027-04-18 → 2027-04-25 (+7d) | 2027-04-25 → 2027-05-02 (+7d) | -119.5d → -121.4d |
| CON-LEG101-LR-7070 | Installation of Medium Voltage Cables [Local – 01 Segment-02] | 2027-04-26 → 2027-05-03 (+7d) | 2027-05-03 → 2027-05-10 (+7d) | -42.85d → -47.65d |
| CON-LEG101-LR-7160 | Installation of Straight joints cables [Local – 01 Segment-02] | 2027-05-04 → 2027-05-11 (+7d) | 2027-05-09 → 2027-05-20 (+11d) | -42.85d → -47.65d |
| CON-LEG101-LR-7250 | Installation of Cable Termination for 13.8 kv 3Cx 500 mm², Al /XLPE/LLDPE [Local – 01 Segment-02] | 2027-05-13 → 2027-05-25 (+12d) | 2027-05-20 → 2027-05-27 (+7d) | -45.85d → -50.65d |
| CON-LEG101-LR-7340 | Installation of Medium Voltage Switchgears [Local – 01 Segment-02] | 2027-05-22 → 2027-05-29 (+7d) | 2027-05-29 → 2027-06-05 (+7d) | -45.85d → -50.65d |
| CON-LEG101-LR-7690 | Installation of Cable Termination [Local – 01 Segment-02] | 2027-05-30 → 2027-06-06 (+7d) | 2027-06-03 → 2027-06-10 (+7d) | -45.85d → -50.65d |
| 3 | **LOCAL - 01 Segment-03 (From 2+133 to 3+200)** |  | 2027-06-30 → 2027-07-07 (+7d) |  |
| 8 | **Electrical Works** |  | 2027-06-30 → 2027-07-07 (+7d) |  |
| 2 | **Medium Voltage** |  | 2027-06-30 → 2027-07-07 (+7d) |  |
| CON-LEG101-LR-6900 | Excavation for Medium Voltage trench [Local – 01 Segment-03] | 2027-06-05 → 2027-06-12 (+7d) | 2027-06-08 → 2027-06-15 (+7d) | -45.85d → -50.65d |
| CON-LEG101-LR-7080 | Installation of Medium Voltage Cables [Local – 01 Segment-03] | 2027-06-09 → 2027-06-16 (+7d) | 2027-06-16 → 2027-06-23 (+7d) | -45.85d → -50.65d |
| CON-LEG101-LR-7170 | Installation of Straight joints cables [Local – 01 Segment-03] | 2027-06-17 → 2027-06-24 (+7d) | 2027-06-19 → 2027-06-26 (+7d) | -45.85d → -50.65d |
| CON-LEG101-LR-7260 | Installation of Cable Termination for 13.8 kv 3Cx 500 mm², Al /XLPE/LLDPE [Local – 01 Segment-03] | 2027-06-20 → 2027-06-27 (+7d) | 2027-06-22 → 2027-06-29 (+7d) | -45.85d → -50.65d |
| CON-LEG101-LR-7350 | Installation of Medium Voltage Switchgears [Local – 01 Segment-03] | 2027-06-23 → 2027-06-30 (+7d) | 2027-06-27 → 2027-07-04 (+7d) | -45.85d → -50.65d |
| CON-LEG101-LR-7700 | Installation of Cable Termination [Local – 01 Segment-03] | 2027-06-28 → 2027-07-05 (+7d) | 2027-06-30 → 2027-07-07 (+7d) | -45.85d → -50.65d |
| 4 | **Local – 02** |  | 2027-06-19 → 2027-06-26 (+7d) |  |
| 8 | **Electrical Works** |  | 2027-06-19 → 2027-06-26 (+7d) |  |
| 2 | **Medium Voltage** |  | 2027-06-19 → 2027-06-26 (+7d) |  |
| CON-LEG101-LR-6910 | Excavation for Medium Voltage trench [Local – 02 ] | 2027-04-26 → 2027-05-03 (+7d) | 2027-05-04 → 2027-05-11 (+7d) | -119.5d → -121.4d |
| CON-LEG101-LR-7090 | Installation of Medium Voltage Cables [Local – 02 ] | 2027-05-05 → 2027-05-12 (+7d) | 2027-05-24 → 2027-05-31 (+7d) | -119.5d → -121.4d |
| CON-LEG101-LR-7180 | Installation of Straight joints cables [Local – 02 ] | 2027-05-25 → 2027-06-01 (+7d) | 2027-05-31 → 2027-06-07 (+7d) | -119.5d → -121.4d |
| CON-LEG101-LR-7270 | Installation of Cable Termination for 13.8 kv 3Cx 500 mm², Al /XLPE/LLDPE [Local – 02 ] | 2027-06-01 → 2027-06-08 (+7d) | 2027-06-09 → 2027-06-16 (+7d) | -119.5d → -121.4d |
| CON-LEG101-LR-7360 | Installation of Medium Voltage Switchgears [Local – 02 ] | 2027-06-10 → 2027-06-17 (+7d) | 2027-06-15 → 2027-06-22 (+7d) | -119.5d → -121.4d |
| CON-LEG101-LR-7710 | Installation of Cable Termination [Local – 02 ] | 2027-06-16 → 2027-06-23 (+7d) | 2027-06-19 → 2027-06-26 (+7d) | -119.5d → -121.4d |
| 2 | **Local – 03** |  | 2027-07-12 → 2027-07-19 (+7d) |  |
| 8 | **Electrical Works** |  | 2027-07-12 → 2027-07-19 (+7d) |  |
| 2 | **Medium Voltage** |  | 2027-07-12 → 2027-07-19 (+7d) |  |
| CON-LEG101-LR-6920 | Excavation for Medium Voltage trench [Local – 03 ] | 2027-06-20 → 2027-06-27 (+7d) | 2027-06-22 → 2027-06-29 (+7d) | -119.5d → -121.4d |
| CON-LEG101-LR-7100 | Installation of Medium Voltage Cables [Local – 03 ] | 2027-06-23 → 2027-06-30 (+7d) | 2027-06-28 → 2027-07-05 (+7d) | -55.85d → -60.65d |
| CON-LEG101-LR-7190 | Installation of Straight joints cables [Local – 03 ] | 2027-06-29 → 2027-07-06 (+7d) | 2027-06-30 → 2027-07-07 (+7d) | -55.85d → -60.65d |
| CON-LEG101-LR-7280 | Installation of Cable Termination for 13.8 kv 3Cx 500 mm², Al /XLPE/LLDPE [Local – 03 ] | 2027-07-01 → 2027-07-08 (+7d) | 2027-07-04 → 2027-07-11 (+7d) | -55.85d → -60.65d |
| CON-LEG101-LR-7370 | Installation of Medium Voltage Switchgears [Local – 03 ] | 2027-07-05 → 2027-07-12 (+7d) | 2027-07-08 → 2027-07-15 (+7d) | -55.85d → -60.65d |
| CON-LEG101-LR-7720 | Installation of Cable Termination [Local – 03 ] | 2027-07-10 → 2027-07-17 (+7d) | 2027-07-12 → 2027-07-19 (+7d) | -55.85d → -60.65d |
| 3 | **Local – 04** |  | 2027-07-17 → 2027-07-24 (+7d) |  |
| 7 | **Road Works** |  | 2027-02-18 → 2027-02-27 (+9d) |  |
| 1 | **Earthworks and Site Grading** |  | 2027-01-16 → 2027-01-23 (+7d) |  |
| CON-LEG101-LR-1800 | Excavation for Roadway [Local – 04 ] | 2026-12-06 → 2026-12-13 (+7d) | 2026-12-22 → 2026-12-29 (+7d) | -16.74d → -18.64d |
| CON-LEG101-LR-4420 | Embankments to the roads [Local – 04 ] | 2026-12-23 → 2026-12-30 (+7d) | 2027-01-16 → 2027-01-23 (+7d) | 63.15d → 58.35d |
| 2 | **Asphalt Work** | 2027-01-17 → 2027-01-24 (+7d) | 2027-02-18 → 2027-02-27 (+9d) |  |
| CON-LEG101-LR-5630 | Subgrade [Local – 04 ] | 2027-01-17 → 2027-01-24 (+7d) | 2027-01-30 → 2027-02-06 (+7d) | 63.15d → 58.35d |
| CON-LEG101-LR-5730 | Aggregate base course [Local – 04 ] | 2027-02-01 → 2027-02-08 (+7d) | 2027-02-14 → 2027-02-21 (+7d) | 62.15d → 57.35d |
| CON-LEG101-LR-5830 | Prime Coat (MC1) [Local – 04 ] | 2027-02-15 → 2027-02-23 (+8d) | 2027-02-16 → 2027-02-24 (+8d) | 62.15d → 57.35d |
| CON-LEG101-LR-5930 | Bituminous Base Course [Local – 04 ] | 2027-02-17 → 2027-02-25 (+8d) | 2027-02-18 → 2027-02-27 (+9d) | 62.15d → 57.35d |
| 1 | **Electric Works** | 2027-06-20 → 2027-06-27 (+7d) | 2027-07-17 → 2027-07-24 (+7d) |  |
| 2 | **Medium Voltage** | 2027-06-20 → 2027-06-27 (+7d) | 2027-07-17 → 2027-07-24 (+7d) |  |
| CON-LEG101-LR-6930 | Excavation for Medium Voltage trench [Local – 04 ] | 2027-06-20 → 2027-06-27 (+7d) | 2027-06-23 → 2027-06-30 (+7d) | -119.5d → -121.4d |
| CON-LEG101-LR-7020 | Installation of Medium Voltage Cables Duct Banks [Local – 04 ] | 2027-06-24 → 2027-07-01 (+7d) | 2027-06-27 → 2027-07-04 (+7d) | -59.85d → -64.65d |
| CON-LEG101-LR-7110 | Installation of Medium Voltage Cables [Local – 04 ] | 2027-06-28 → 2027-07-05 (+7d) | 2027-07-04 → 2027-07-11 (+7d) | -59.85d → -64.65d |
| CON-LEG101-LR-7200 | Installation of Straight joints cables [Local – 04 ] | 2027-07-05 → 2027-07-12 (+7d) | 2027-07-07 → 2027-07-14 (+7d) | -59.85d → -64.65d |
| CON-LEG101-LR-7290 | Installation of Cable Termination for 13.8 kv 3Cx 500 mm², Al /XLPE/LLDPE [Local – 04 ] | 2027-07-08 → 2027-07-15 (+7d) | 2027-07-11 → 2027-07-18 (+7d) | -59.85d → -64.65d |
| CON-LEG101-LR-7380 | Installation of Medium Voltage Switchgears [Local – 04 ] | 2027-07-12 → 2027-07-19 (+7d) | 2027-07-13 → 2027-07-20 (+7d) | -59.85d → -64.65d |
| CON-LEG101-LR-7730 | Installation of Cable Termination [Local – 04 ] | 2027-07-14 → 2027-07-21 (+7d) | 2027-07-17 → 2027-07-24 (+7d) | -59.85d → -64.65d |
| 5 | **Local – 05** |  | 2027-07-11 → 2027-07-18 (+7d) |  |

| ID | Task | Start | Finish | Total float |
| --- | --- | --- | --- | --- |
| 8 | **Electrical Works** |  | 2027-07-11 → 2027-07-18 (+7d) |  |
| 2 | **Medium Voltage** |  | 2027-07-11 → 2027-07-18 (+7d) |  |
| CON-LEG101-LR-6940 | Excavation for Medium Voltage trench [Local – 05 ] | 2027-06-24 → 2027-07-01 (+7d) | 2027-06-28 → 2027-07-05 (+7d) | -54.85d → -59.65d |
| CON-LEG101-LR-7120 | Installation of Medium Voltage Cables [Local – 05 ] | 2027-06-29 → 2027-07-06 (+7d) | 2027-07-03 → 2027-07-10 (+7d) | -54.85d → -59.65d |
| CON-LEG101-LR-7210 | Installation of Straight joints cables [Local – 05 ] | 2027-07-04 → 2027-07-11 (+7d) | 2027-07-05 → 2027-07-12 (+7d) | -54.85d → -59.65d |
| CON-LEG101-LR-7300 | Installation of Cable Termination for 13.8 kv 3Cx 500 mm², Al /XLPE/LLDPE [Local – 05 ] | 2027-07-06 → 2027-07-13 (+7d) | 2027-07-07 → 2027-07-14 (+7d) | -54.85d → -59.65d |
| CON-LEG101-LR-7390 | Installation of Medium Voltage Switchgears [Local – 05 ] | 2027-07-08 → 2027-07-15 (+7d) | 2027-07-10 → 2027-07-17 (+7d) | -54.85d → -59.65d |
| CON-LEG101-LR-7740 | Installation of Cable Termination [Local – 05 ] | 2027-07-08 → 2027-07-15 (+7d) | 2027-07-11 → 2027-07-18 (+7d) | -54.85d → -59.65d |
| 6 | **Local – 06** |  | 2027-07-10 → 2027-07-17 (+7d) |  |
| 8 | **Electrical Works** |  | 2027-07-10 → 2027-07-17 (+7d) |  |
| 2 | **Medium Voltage** |  | 2027-07-10 → 2027-07-17 (+7d) |  |
| CON-LEG101-LR-6950 | Excavation for Medium Voltage trench [Local – 06 ] | 2027-06-26 → 2027-07-03 (+7d) | 2027-06-28 → 2027-07-05 (+7d) | -53.85d → -58.65d |
| CON-LEG101-LR-7130 | Installation of Medium Voltage Cables [Local – 06 ] | 2027-06-29 → 2027-07-06 (+7d) | 2027-07-01 → 2027-07-08 (+7d) | -53.85d → -58.65d |
| CON-LEG101-LR-7220 | Installation of Straight joints cables [Local – 06 ] | 2027-07-03 → 2027-07-10 (+7d) | 2027-07-04 → 2027-07-11 (+7d) | -53.85d → -58.65d |
| CON-LEG101-LR-7310 | Installation of Cable Termination for 13.8 kv 3Cx 500 mm², Al /XLPE/LLDPE [Local – 06 ] | 2027-07-05 → 2027-07-12 (+7d) | 2027-07-06 → 2027-07-13 (+7d) | -53.85d → -58.65d |
| CON-LEG101-LR-7400 | Installation of Medium Voltage Switchgears [Local – 06 ] | 2027-07-07 → 2027-07-14 (+7d) | 2027-07-08 → 2027-07-15 (+7d) | -53.85d → -58.65d |
| CON-LEG101-LR-7750 | Installation of Cable Termination [Local – 06 ] | 2027-07-07 → 2027-07-14 (+7d) | 2027-07-10 → 2027-07-17 (+7d) | -53.85d → -58.65d |
| 7 | **Local – 07** |  | 2027-07-08 → 2027-07-15 (+7d) |  |
| 7 | **Road Works** |  | 2026-12-23 → 2026-12-30 (+7d) |  |
| 1 | **Earthworks and Site Grading** |  | 2026-12-23 → 2026-12-30 (+7d) |  |
| CON-LEG101-LR-5070 | Embankments to the parcels for roads [Local – 07 ] |  | 2026-12-23 → 2026-12-30 (+7d) | 107.87d → 103.07d |
| 8 | **Electrical Works** |  | 2027-07-08 → 2027-07-15 (+7d) |  |
| 2 | **Medium Voltage** |  | 2027-07-08 → 2027-07-15 (+7d) |  |
| CON-LEG101-LR-6960 | Excavation for Medium Voltage trench [Local – 07 ] | 2027-06-26 → 2027-07-03 (+7d) | 2027-06-28 → 2027-07-05 (+7d) | -52.85d → -57.65d |
| CON-LEG101-LR-7140 | Installation of Medium Voltage Cables [Local – 07 ] | 2027-06-29 → 2027-07-06 (+7d) | 2027-07-01 → 2027-07-08 (+7d) | -52.85d → -57.65d |
| CON-LEG101-LR-7230 | Installation of Straight joints cables [Local – 07 ] | 2027-07-03 → 2027-07-10 (+7d) | 2027-07-04 → 2027-07-11 (+7d) | -52.85d → -57.65d |
| CON-LEG101-LR-7320 | Installation of Cable Termination for 13.8 kv 3Cx 500 mm², Al /XLPE/LLDPE [Local – 07 ] | 2027-07-05 → 2027-07-12 (+7d) | 2027-07-06 → 2027-07-13 (+7d) | -52.85d → -57.65d |
| CON-LEG101-LR-7410 | Installation of Medium Voltage Switchgears [Local – 07 ] | 2027-07-07 → 2027-07-14 (+7d) | 2027-07-08 → 2027-07-15 (+7d) | -52.85d → -57.65d |
| CON-LEG101-LR-7760 | Installation of Cable Termination [Local – 07 ] | 2027-07-07 → 2027-07-14 (+7d) | 2027-07-08 → 2027-07-15 (+7d) | -52.85d → -57.65d |
| 6 | **Deep Infrastructure network** |  | 2027-02-20 → 2027-02-28 (+8d) |  |
| 1 | **Local – 01** |  | 2026-12-08 → 2026-12-15 (+7d) |  |
| 1 | **LOCAL - 01 Segment-01 (From 0+000 to 1+066)** |  | 2026-12-07 → 2026-12-14 (+7d) |  |
| 1 | **Stormwater Utilities** |  | 2026-12-07 → 2026-12-14 (+7d) |  |
| 1 | **Manhole** |  | 2026-12-06 → 2026-12-13 (+7d) |  |
| CON-LEG101-LR-10920 | Finishing and Testing of Inlet Manholes [Local – 01 Segment-01] |  | 2026-12-06 → 2026-12-13 (+7d) | 122.4d → 117.6d |
| 3 | **Concrete Chambers/Outfalls** |  | 2026-12-07 → 2026-12-14 (+7d) |  |
| CON-LEG101-LR-10880 | FInishing and Testing of Concrete chambers [Local – 01 Segment-01] |  | 2026-12-07 → 2026-12-14 (+7d) | 130.9d → 125.5d |
| 4 | **Sanitary Sewerage** |  | 2026-12-06 → 2026-12-13 (+7d) |  |
| 1 | **Manhole** |  | 2026-12-06 → 2026-12-13 (+7d) |  |
| CON-LEG101-LR-3500 | Installation of Fiberglass Manholes [Local – 01 Segment-01] |  | 2026-12-06 → 2026-12-13 (+7d) | 71.15d → 66.35d |
| 2 | **LOCAL - 01 Segment-02 (From 1+066 to 2+133)** |  | 2026-12-07 → 2026-12-14 (+7d) |  |
| 1 | **Stormwater Utilities** |  | 2026-12-07 → 2026-12-14 (+7d) |  |
| 3 | **Concrete Chambers/Outfalls** |  | 2026-12-07 → 2026-12-14 (+7d) |  |
| CON-LEG101-LR-11030 | FInishing and Testing of Concrete chambers [Local – 01 Segment-02] |  | 2026-12-07 → 2026-12-14 (+7d) | 130.9d → 125.5d |
| 4 | **Sanitary Sewerage** |  | 2026-12-06 → 2026-12-13 (+7d) |  |
| 1 | **Manhole** |  | 2026-12-06 → 2026-12-13 (+7d) |  |
| CON-LEG101-LR-3510 | Installation of Fiberglass Manholes [Local – 01 Segment-02] |  | 2026-12-06 → 2026-12-13 (+7d) | 72.73d → 67.93d |
| 3 | **LOCAL - 01 Segment-03 (From 2+133 to 3+200)** |  | 2026-12-08 → 2026-12-15 (+7d) |  |
| 1 | **Stormwater Utilities** |  | 2026-12-08 → 2026-12-15 (+7d) |  |
| 1 | **Manhole** |  | 2026-12-06 → 2026-12-13 (+7d) |  |
| CON-LEG101-LR-11070 | Finishing and Testing of Inlet Manholes [Local – 01 Segment-03] |  | 2026-12-06 → 2026-12-13 (+7d) | 99.85d → 95.05d |
| 3 | **Concrete Chambers/Outfalls** |  | 2026-12-08 → 2026-12-15 (+7d) |  |
| CON-LEG101-LR-11130 | FInishing and Testing of Concrete chambers [Local – 01 Segment-03] |  | 2026-12-08 → 2026-12-15 (+7d) | 130.9d → 125.5d |
| 4 | **Sanitary Sewerage** |  | 2026-12-06 → 2026-12-13 (+7d) |  |
| 1 | **Manhole** |  | 2026-12-06 → 2026-12-13 (+7d) |  |
| CON-LEG101-LR-3520 | Installation of Fiberglass Manholes [Local – 01 Segment-03] |  | 2026-12-06 → 2026-12-13 (+7d) | 99.15d → 94.35d |
| 2 | **Local – 02** |  | 2026-12-08 → 2026-12-15 (+7d) |  |
| 1 | **Stormwater Utilities** |  | 2026-12-08 → 2026-12-15 (+7d) |  |
| 1 | **Manhole** |  | 2026-12-06 → 2026-12-13 (+7d) |  |
| CON-LEG101-LR-11180 | Finishing and Testing of Inlet Manholes [Local – 02 ] |  | 2026-12-06 → 2026-12-13 (+7d) | 122.35d → 117.55d |
| 3 | **Concrete Chambers/Outfalls** |  | 2026-12-08 → 2026-12-15 (+7d) |  |
| CON-LEG101-LR-11230 | FInishing and Testing of Concrete chambers [Local – 02 ] |  | 2026-12-08 → 2026-12-15 (+7d) | 130.9d → 125.5d |
| 4 | **Sanitary Sewerage** |  | 2026-12-06 → 2026-12-13 (+7d) |  |
| 1 | **Manhole** |  | 2026-12-06 → 2026-12-13 (+7d) |  |
| CON-LEG101-LR-3530 | Installation of Fiberglass Manholes [Local – 02 ] |  | 2026-12-06 → 2026-12-13 (+7d) | -2.74d → -4.64d |
| 3 | **Local – 03** |  | 2026-12-09 → 2026-12-16 (+7d) |  |
| 1 | **Stormwater Utilities** |  | 2026-12-09 → 2026-12-16 (+7d) |  |
| 1 | **Manhole** |  | 2026-12-08 → 2026-12-15 (+7d) |  |
| CON-LEG101-LR-11280 | Finishing and Testing of Inlet Manholes [Local – 03 ] |  | 2026-12-08 → 2026-12-15 (+7d) | 128.7d → 123.3d |
| 3 | **Concrete Chambers/Outfalls** |  | 2026-12-09 → 2026-12-16 (+7d) |  |

| ID | Task | Start | Finish | Complete | Total float |
| --- | --- | --- | --- | --- | --- |
| CON-LEG101-LR-11340 | FInishing and Testing of Concrete chambers [Local – 03 ] |  | 2026-12-09 → 2026-12-16 (+7d) |  | 130.9d → 125.5d |
| 4 | **Local – 04** |  | 2027-02-18 → 2027-02-27 (+9d) |  |  |
| 1 | **Stormwater Utilities** |  | 2027-02-18 → 2027-02-27 (+9d) |  |  |
| 2 | **Pipe Work** |  | 2027-01-12 → 2027-01-19 (+7d) |  |  |
| CON-LEG101-LR-3930 | Testing for Stormwater Utilities Network [Local – 04 ] | 2026-12-23 → 2026-12-30 (+7d) | 2027-01-05 → 2027-01-12 (+7d) |  | -16.74d → -18.64d |
| CON-LEG101-LR-4140 | Installation of Micron Marker Magnetic Tape [Local – 04 ] | 2027-01-06 → 2027-01-13 (+7d) | 2027-01-07 → 2027-01-14 (+7d) |  | -16.74d → -18.64d |
| CON-LEG101-LR-4250 | Backfilling to Subgrade Elevation [Local – 04 ] | 2027-01-09 → 2027-01-16 (+7d) | 2027-01-12 → 2027-01-19 (+7d) |  | -16.74d → -18.64d |
| 1 | **Manhole** |  | 2027-01-20 → 2027-01-27 (+7d) |  |  |
| CON-LEG101-LR-4370 | Installation of Inlet Manholes [Local – 04 ] |  | 2026-12-27 → 2027-01-03 (+7d) |  | -8.74d → -10.64d |
| CON-LEG101-LR-11380 | Backfilling of Inlet Manholes [Local – 04 ] | 2026-12-28 → 2027-01-04 (+7d) | 2027-01-03 → 2027-01-10 (+7d) |  | -8.74d → -10.64d |
| CON-LEG101-LR-11390 | Finishing and Testing of Inlet Manholes [Local – 04 ] | 2027-01-04 → 2027-01-11 (+7d) | 2027-01-20 → 2027-01-27 (+7d) |  | 106.5d → 101.1d |
| 3 | **Concrete Chambers/Outfalls** | 2026-12-28 → 2027-01-04 (+7d) | 2027-02-18 → 2027-02-27 (+9d) |  |  |
| CON-LEG101-LR-11400 | Excavation of Concrete chambers [Local – 04 ] | 2026-12-28 → 2027-01-04 (+7d) | 2027-01-03 → 2027-01-10 (+7d) |  | 62.15d → 57.35d |
| CON-LEG101-LR-11410 | PC of Concrete chambers [Local – 04 ] | 2027-01-04 → 2027-01-11 (+7d) | 2027-01-05 → 2027-01-12 (+7d) |  | 62.15d → 57.35d |
| CON-LEG101-LR-4470 | Installation of Concrete chambers [Local – 04 ] | 2027-01-06 → 2027-01-13 (+7d) | 2027-01-17 → 2027-01-24 (+7d) |  | 62.15d → 57.35d |
| CON-LEG101-LR-11420 | Installation UPVC Pipes to Concrete chambers [Local – 04 ] | 2027-01-18 → 2027-01-25 (+7d) | 2027-01-24 → 2027-01-31 (+7d) |  | 62.15d → 57.35d |
| CON-LEG101-LR-11430 | Backfilling to Concrete chambers [Local – 04 ] | 2027-01-25 → 2027-02-01 (+7d) | 2027-01-31 → 2027-02-07 (+7d) |  | 62.15d → 57.35d |
| CON-LEG101-LR-11440 | FInishing and Testing of Concrete chambers [Local – 04 ] | 2027-02-01 → 2027-02-08 (+7d) | 2027-02-18 → 2027-02-27 (+9d) |  | 85.45d → 80.05d |
| 4 | **Sanitary Sewerage** |  | 2027-01-04 → 2027-01-11 (+7d) |  |  |
| 2 | **Pipe Work** |  | 2027-01-04 → 2027-01-11 (+7d) |  |  |
| CON-LEG101-LR-3180 | Concrete encasement, pipe dia 200 and 350 mm [Local – 04 ] | 2026-12-23 → 2026-12-30 (+7d) | 2026-12-26 → 2027-01-02 (+7d) |  | -9.74d → -11.64d |
| CON-LEG101-LR-3360 | Installation of Micron Marker Magnetic Tape [Local – 04 ] | 2026-12-27 → 2027-01-03 (+7d) | 2026-12-28 → 2027-01-04 (+7d) |  | -9.74d → -11.64d |
| CON-LEG101-LR-3450 | Backfilling to Subgrade Elevation [Local – 04 ] | 2026-12-29 → 2027-01-05 (+7d) | 2027-01-04 → 2027-01-11 (+7d) |  | -9.74d → -11.64d |
| 1 | **Manhole** |  | 2026-12-26 → 2027-01-02 (+7d) |  |  |
| CON-LEG101-LR-3540 | Installation of Fiberglass Manholes [Local – 04 ] |  | 2026-12-26 → 2027-01-02 (+7d) |  | -1.74d → -3.64d |
| 5 | **Local – 05** |  | 2026-12-23 → 2026-12-30 (+7d) |  |  |
| 4 | **Sanitary Sewerage** |  | 2026-12-23 → 2026-12-30 (+7d) |  |  |
| 1 | **Manhole** |  | 2026-12-23 → 2026-12-30 (+7d) |  |  |
| CON-LEG101-LR-3550 | Installation of Fiberglass Manholes [Local – 05 ] |  | 2026-12-23 → 2026-12-30 (+7d) |  | 92.25d → 87.45d |
| 8 | **Local – 08** |  | 2027-02-20 → 2027-02-28 (+8d) |  |  |
| 1 | **Stormwater Utilities** |  | 2027-02-20 → 2027-02-28 (+8d) |  |  |
| 1 | **Manhole** |  | 2027-01-21 → 2027-01-28 (+7d) |  |  |
| CON-LEG101-LR-11750 | Finishing and Testing of Inlet Manholes [Local – 08 ] |  | 2027-01-21 → 2027-01-28 (+7d) |  | 106.5d → 101.1d |
| 3 | **Concrete Chambers/Outfalls** |  | 2027-02-20 → 2027-02-28 (+8d) |  |  |
| CON-LEG101-LR-11800 | FInishing and Testing of Concrete chambers [Local – 08 ] |  | 2027-02-20 → 2027-02-28 (+8d) |  | 85.45d → 80.05d |
| 7 | **Shallow infrastructure network** |  | 2027-10-31 → 2027-11-07 (+7d) |  |  |
| 1 | **Local – 01** |  | 2027-08-19 → 2027-08-26 (+7d) |  |  |
| 1 | **LOCAL - 01 Segment-01 (From 0+000 to 1+066)** |  | 2027-08-14 → 2027-08-21 (+7d) |  |  |
| 1 | **Electrical Works** |  | 2027-07-20 → 2027-07-27 (+7d) |  |  |
| 3 | **Low Voltage** |  | 2027-07-20 → 2027-07-27 (+7d) |  |  |
| CON-LEG101-LR-8760 | Installation of Earthing System [Local – 01 Segment-01] |  | 2027-07-20 → 2027-07-27 (+7d) |  | 29.5d → 23.5d |
| 10 | **Telecommunications** |  | 2027-07-31 → 2027-08-04 (+4d) |  |  |
| CON-LEG101-LR-9030 | Installation of Sand encased duct banks for secondary network [Local – 01 Segment-01] |  | 2027-07-21 → 2027-07-27 (+6d) | 75% → 80% | 19.85d → 16.2d |
| CON-LEG101-LR-9130 | Installation of Sand and soil encased duct banks, for combined network of primary and secondary [Local – 01 Segment-01 |  | 2027-07-26 → 2027-08-01 (+6d) | 75% → 80% | 19.85d → 16.2d |
| CON-LEG101-LR-9230 | Installation of Concrete encased duct banks for for combined network of primary and secondary [Local – 01 Segment-01] |  | 2027-07-31 → 2027-08-04 (+4d) | 75% → 80% | 19.85d → 16.2d |
| 11 | **CCTV feeding system and GSM** |  | 2027-07-24 → 2027-07-31 (+7d) |  |  |
| CON-LEG101-LR-9780 | Installation of Security workstation with 1 x 19" LED screen [Local – 01 Segment-01] | 2027-07-18 → 2027-07-25 (+7d) | 2027-07-18 → 2027-07-25 (+7d) |  | 23.6d → 18.6d |
| CON-LEG101-LR-9790 | Installation of LED Screen 43" (24/7 operation) with Ethernet decoders [Local – 01 Segment-01] | 2027-07-19 → 2027-07-26 (+7d) | 2027-07-20 → 2027-07-27 (+7d) |  | 23.6d → 18.6d |
| CON-LEG101-LR-9830 | Installation of Network Video Recorder 4k 64 Channel [Local – 01 Segment-01] | 2027-07-21 → 2027-07-28 (+7d) | 2027-07-21 → 2027-07-28 (+7d) |  | 23.6d → 18.6d |
| CON-LEG101-LR-9840 | Installation of Keypad [Local – 01 Segment-01] | 2027-07-22 → 2027-07-29 (+7d) | 2027-07-24 → 2027-07-31 (+7d) |  | 23.6d → 18.6d |
| 12 | **Earthing System** | 2027-07-25 → 2026-11-21 (-246d) | 2027-07-26 → 2027-08-01 (+6d) |  |  |
| CON-LEG101-LR-8280 | Installation of Earthing for Distribution panels,SL feeder pillars, KWH, Unit substations and RMU [Local – 01 Segment-01 | 2027-07-25 → 2026-11-21 A (-246d) | 2027-07-26 → 2027-08-01 (+6d) | 0% → 50% | 23.6d → 18.6d |
| 9 | **Road Lighting** |  | 2027-08-14 → 2027-08-21 (+7d) |  |  |
| CON-LEG101-LR-7420 | Installation of Unit Substation Including concrete foundations and fencing [Local – 01 Segment-01] |  | 2027-07-24 → 2027-07-31 (+7d) |  | -59.85d → -64.65d |
| CON-LEG101-LR-8330 | Installation of Earthing for Streetlighting feeders for every end pole circuits. [Local – 01 Segment-01] |  | 2027-08-14 → 2027-08-21 (+7d) | 40% → 50% | -59.85d → -64.65d |
| CON-LEG101-LR-7500 | Installation of Ring Main Unit RMU [Local – 01 Segment-01] | 2027-07-24 → 2027-07-31 (+7d) | 2027-08-10 → 2027-08-17 (+7d) |  | -59.85d → -64.65d |
| 2 | **LOCAL - 01 Segment-02 (From 1+066 to 2+133)** |  | 2027-08-19 → 2027-08-26 (+7d) |  |  |
| 1 | **Electrical Works** |  | 2027-08-15 → 2027-08-21 (+6d) |  |  |
| 3 | **Low Voltage** |  | 2027-08-15 → 2027-08-21 (+6d) |  |  |
| CON-LEG101-LR-8770 | Installation of Earthing System [Local – 01 Segment-02] |  | 2027-08-15 → 2027-08-21 (+6d) |  | 7.35d → 1.95d |
| 12 | **Earthing System** |  | 2027-08-19 → 2027-08-26 (+7d) |  |  |
| CON-LEG101-LR-8290 | Installation of Earthing for Distribution panels,SL feeder pillars, KWH, Unit substations and RMU [Local – 01 Segment-02 |  | 2027-08-19 → 2027-08-26 (+7d) |  | -59.85d → -64.65d |
| 9 | **Road Lighting** |  | 2027-07-19 → 2027-07-26 (+7d) |  |  |
| CON-LEG101-LR-8340 | Installation of Earthing for Streetlighting feeders for every end pole circuits. [Local – 01 Segment-02] |  | 2027-07-19 → 2027-07-26 (+7d) |  | -54.5d → -53.4d |
| 3 | **LOCAL - 01 Segment-03 (From 2+133 to 3+200)** |  | 2027-07-24 → 2027-07-31 (+7d) |  |  |
| 5 | **TSE Network** |  | 2026-12-08 → 2026-12-15 (+7d) |  |  |
| 1 | **Valves/Chamber** |  | 2026-12-08 → 2026-12-15 (+7d) |  |  |
| CON-LEG101-LR-15040 | Installation of Air Valve chambers [Local – 01 Segment-03] |  | 2026-12-08 → 2026-12-15 (+7d) |  | 138.25d → 136.35d |
| CON-LEG101-LR-2630 | Installation of Wash out chambers [Local – 01 Segment-03] |  | 2026-12-07 → 2026-12-14 (+7d) |  | 138.25d → 136.35d |
| 6 | **Public Water Utility Distribution** |  | 2026-12-08 → 2026-12-15 (+7d) |  |  |

| ID | Task | Start | Finish | Complete | Total float |
| --- | --- | --- | --- | --- | --- |
| 1 | **Valves/Chamber** |  | 2026-12-08 → 2026-12-15 (+7d) |  |  |
| CON-LEG101-LR-1270 | Installation of Air Valve chambers [Local – 01 Segment-03] |  | 2026-12-08 → 2026-12-15 (+7d) |  | 149.2d → 147.2d |
| CON-LEG101-LR-1230 | Installation of Wash out chambers [Local – 01 Segment-03] |  | 2026-12-07 → 2026-12-14 (+7d) |  | 149.2d → 147.2d |
| 12 | **Earthing System** | 2027-07-11 → 2026-11-22 (-231d) | 2027-07-19 → 2027-07-21 (+2d) |  |  |
| CON-LEG101-LR-8300 | Installation of Earthing for Distribution panels,SL feeder pillars, KWH, Unit substations and RMU [Local – 01 Segment-03 | 2027-07-11 → 2026-11-22 A (-231d) | 2027-07-19 → 2027-07-21 (+2d) | 0% → 50% | -24.8d → -26.8d |
| 9 | **Road Lighting** |  | 2027-07-24 → 2027-07-31 (+7d) |  |  |
| CON-LEG101-LR-8350 | Installation of Earthing for Streetlighting feeders for every end pole circuits. [Local – 01 Segment-03] |  | 2027-07-24 → 2027-07-31 (+7d) | 30% → 40% | -54.5d → -53.4d |
| 2 | **Local – 02** |  | 2027-08-01 → 2027-08-08 (+7d) |  |  |
| 5 | **TSE Network** |  | 2026-12-08 → 2026-12-15 (+7d) |  |  |
| 1 | **Valves/Chamber** |  | 2026-12-08 → 2026-12-15 (+7d) |  |  |
| CON-LEG101-LR-2410 | Installation of Wash out Valves [Local – 02 ] |  | 2026-12-08 → 2026-12-15 (+7d) |  | 80.6d → 78.7d |
| CON-LEG101-LR-2710 | Installation of Wash out chambers [Local – 02 ] |  | 2026-12-08 → 2026-12-15 (+7d) |  | 80.6d → 78.7d |
| 6 | **Public Water Utility Distribution** |  | 2026-12-09 → 2026-12-15 (+6d) |  |  |
| 1 | **Valves/Chamber** |  | 2026-12-09 → 2026-12-15 (+6d) |  |  |
| CON-LEG101-LR-15080 | Installation of Air Valve chambers [Local – 02 ] |  | 2026-12-08 → 2026-12-15 (+7d) |  | 107.15d → 105.6d |
| CON-LEG101-LR-1030 | Installation of Gate (Sluice) valves (Direct buried) [Local – 02 ] |  | 2026-12-09 → 2026-10-29 A (-41d) | 95% → 100% | 107.15d → none |
| CON-LEG101-LR-15070 | Installation of Wash out chambers [Local – 02 ] |  | 2026-12-07 → 2026-12-14 (+7d) |  | 81.4d → 79.5d |
| 1 | **Electrical Works** |  | 2027-08-01 → 2027-08-08 (+7d) |  |  |
| 3 | **Low Voltage** |  | 2027-08-01 → 2027-08-08 (+7d) |  |  |
| CON-LEG101-LR-8490 | Installation of Low Voltage Distribution Panel [Local – 02 ] | 2027-07-11 → 2027-07-18 (+7d) | 2027-07-21 → 2027-07-28 (+7d) |  | -52.5d → -52d |
| CON-LEG101-LR-8540 | Installation of KWH Meters Walls [Local – 02 ] | 2027-07-22 → 2027-07-29 (+7d) | 2027-07-29 → 2027-08-05 (+7d) |  | 18.6d → 12.6d |
| CON-LEG101-LR-8790 | Installation of Earthing System [Local – 02 ] | 2027-07-31 → 2027-08-07 (+7d) | 2027-08-01 → 2027-08-08 (+7d) |  | 18.6d → 12.6d |
| 11 | **CCTV feeding system and GSM** |  | 2027-07-18 → 2027-07-25 (+7d) |  |  |
| CON-LEG101-LR-9800 | Installation of LED Screen 43" (24/7 operation) with Ethernet decoders [Local – 02 ] | 2027-07-11 → 2027-07-18 (+7d) | 2027-07-18 → 2027-07-25 (+7d) |  | -49.5d → -49d |
| 12 | **Earthing System** | 2027-07-26 → 2026-11-23 (-245d) | 2027-08-01 → 2027-08-05 (+4d) |  |  |
| CON-LEG101-LR-8310 | Installation of Earthing for Distribution panels,SL feeder pillars, KWH, Unit substations and RMU [Local – 02 ] | 2027-07-26 → 2026-11-23 A (-245d) | 2027-08-01 → 2027-08-05 (+4d) | 0% → 40% | -55.5d → -55d |
| 9 | **Road Lighting** |  | 2027-07-28 → 2027-08-04 (+7d) |  |  |
| CON-LEG101-LR-8360 | Installation of Earthing for Streetlighting feeders for every end pole circuits. [Local – 02 ] |  | 2027-07-28 → 2027-08-04 (+7d) |  | -55.5d → -55d |
| CON-LEG101-LR-7430 | Installation of Unit Substation Including concrete foundations and fencing [Local – 02 ] | 2027-06-12 → 2027-06-19 (+7d) | 2027-06-19 → 2027-06-26 (+7d) |  | -37.5d → -37d |
| CON-LEG101-LR-7510 | Installation of Ring Main Unit RMU [Local – 02 ] | 2027-07-11 → 2027-07-18 (+7d) | 2027-07-25 → 2027-08-01 (+7d) |  | -55.5d → -55d |
| 3 | **Local – 03** |  | 2027-08-12 → 2027-08-18 (+6d) |  |  |
| 5 | **TSE Network** |  | 2026-12-10 → 2026-12-17 (+7d) |  |  |
| 1 | **Valves/Chamber** |  | 2026-12-10 → 2026-12-17 (+7d) |  |  |
| CON-LEG101-LR-2720 | Installation of Air Valve chambers [Local – 03 ] |  | 2026-12-10 → 2026-12-17 (+7d) |  | 80.6d → 78.7d |
| CON-LEG101-LR-2640 | Installation of Wash out chambers [Local – 03 ] |  | 2026-12-09 → 2026-12-16 (+7d) |  | 80.6d → 78.7d |
| 6 | **Public Water Utility Distribution** |  | 2026-12-12 → 2026-12-19 (+7d) |  |  |
| 1 | **Valves/Chamber** |  | 2026-12-12 → 2026-12-19 (+7d) |  |  |
| CON-LEG101-LR-15110 | Installation of Air Valve chambers [Local – 03 ] |  | 2026-12-12 → 2026-12-19 (+7d) |  | 80.6d → 78.7d |
| 1 | **Electrical Works** |  | 2027-06-26 → 2027-07-03 (+7d) |  |  |
| 3 | **Low Voltage** |  | 2027-06-26 → 2027-07-03 (+7d) |  |  |
| CON-LEG101-LR-8800 | Installation of Earthing System [Local – 03 ] | 2027-06-23 → 2027-06-30 (+7d) | 2027-06-26 → 2027-07-03 (+7d) |  | -33.2d → -32.2d |
| 10 | **Telecommunications** |  | 2027-07-08 → 2027-07-11 (+3d) |  |  |
| CON-LEG101-LR-8870 | Installation of Sand and soil encased duct banks for primary network [Local – 03 ] |  | 2027-06-29 → 2027-07-04 (+5d) | 70% → 80% | -35.3d → -32.6d |
| CON-LEG101-LR-9070 | Installation of Sand encased duct banks for secondary network [Local – 03 ] |  | 2027-07-01 → 2027-07-05 (+4d) | 70% → 80% | -35.3d → -32.6d |
| CON-LEG101-LR-9170 | Installation of Sand and soil encased duct banks, for combined network of primary and secondary [Local – 03 ] |  | 2027-07-07 → 2027-07-10 (+3d) | 70% → 80% | -35.3d → -32.6d |
| CON-LEG101-LR-9270 | Installation of Concrete encased duct banks for for combined network of primary and secondary [Local – 03 ] |  | 2027-07-08 → 2027-07-11 (+3d) | 70% → 80% | -35.3d → -32.6d |
| 12 | **Earthing System** | 2027-08-04 → 2027-08-11 (+7d) | 2027-08-12 → 2027-08-18 (+6d) |  |  |
| CON-LEG101-LR-15170 | Installation of Earthing for Distribution panels,SL feeder pillars, KWH, Unit substations and RMU [Local – 03 ] | 2027-08-04 → 2027-08-11 (+7d) | 2027-08-12 → 2027-08-18 (+6d) |  | 1.4d → -4.4d |
| 9 | **Road Lighting** |  | 2027-08-04 → 2027-08-10 (+6d) |  |  |
| CON-LEG101-LR-7440 | Installation of Unit Substation Including concrete foundations and fencing [Local – 03 ] |  | 2027-07-11 → 2027-07-14 (+3d) |  | 1.4d → -2.2d |
| CON-LEG101-LR-7520 | Installation of Ring Main Unit RMU [Local – 03 ] | 2027-07-11 → 2027-07-18 (+7d) | 2027-07-28 → 2027-08-03 (+6d) |  | 1.4d → -4.4d |
| CON-LEG101-LR-8370 | Installation of Earthing for Streetlighting feeders for every end pole circuits. [Local – 03 ] | 2027-07-28 → 2027-08-04 (+7d) | 2027-08-04 → 2027-08-10 (+6d) |  | 1.4d → -4.4d |
| 4 | **Local – 04** |  | 2027-10-31 → 2027-11-07 (+7d) |  |  |
| 5 | **TSE Network** |  | 2027-05-30 → 2027-06-06 (+7d) |  |  |
| 2 | **Pipe Work** |  | 2027-02-18 → 2027-02-27 (+9d) |  |  |
| CON-LEG101-LR-1350 | Excavation for TSE Network [Local – 04 ] |  | 2027-01-14 → 2027-01-21 (+7d) |  | -16.74d → -18.64d |
| CON-LEG101-LR-1470 | Granular bedding for TSE Network [Local – 04 ] |  | 2027-01-16 → 2027-01-23 (+7d) |  | -16.74d → -18.64d |
| CON-LEG101-LR-1580 | Installation of Pipe for TSE Network [Local – 04 ] |  | 2027-01-23 → 2027-01-30 (+7d) |  | -16.74d → -18.64d |
| CON-LEG101-LR-1910 | Granular Surround for TSE Network [Local – 04 ] |  | 2027-02-06 → 2027-02-17 (+11d) |  | -16.74d → -18.64d |
| CON-LEG101-LR-2020 | Installation of Micron Marker Magnetic Tape [Local – 04 ] |  | 2027-02-07 → 2027-02-18 (+11d) |  | -16.74d → -18.64d |
| CON-LEG101-LR-2130 | Backfilling to Subgrade Elevation [Local – 04 ] |  | 2027-02-18 → 2027-02-27 (+9d) |  | -16.74d → -18.64d |
| CON-LEG101-LR-1690 | Testing for TSE Network [Local – 04 ] | 2027-01-23 → 2027-01-30 (+7d) | 2027-01-30 → 2027-02-06 (+7d) |  | -16.74d → -18.64d |
| CON-LEG101-LR-1810 | Concrete encasement, pipe dia 110 mm [Local – 04 ] | 2027-01-30 → 2027-02-06 (+7d) | 2027-02-02 → 2027-02-14 (+12d) |  | -16.74d → -18.64d |
| 1 | **Valves/Chamber** | 2027-02-07 → 2027-02-18 (+11d) | 2027-05-30 → 2027-06-06 (+7d) |  |  |
| CON-LEG101-LR-2730 | Installation of Air Valve chambers [Local – 04 ] | 2027-02-07 → 2027-02-18 (+11d) | 2027-03-09 → 2027-03-16 (+7d) |  | -0.98d → -2.88d |
| CON-LEG101-LR-15060 | Installation of Wash-out Valve chambers [Local – 04 ] | 2027-03-09 → 2027-03-16 (+7d) | 2027-04-03 → 2027-04-10 (+7d) |  | -0.98d → -2.88d |
| CON-LEG101-LR-2240 | Installation of Gate (Sluice) valves (Direct buried) [Local – 04 ] | 2027-03-09 → 2027-03-16 (+7d) | 2027-03-20 → 2027-03-27 (+7d) |  | 11.02d → 9.12d |
| CON-LEG101-LR-2350 | Installation of Wash-out Valves [Local – 04 ] | 2027-04-03 → 2027-04-10 (+7d) | 2027-04-20 → 2027-04-27 (+7d) |  | -0.98d → -2.88d |
| CON-LEG101-LR-2430 | Installation of Air Valves [Local – 04 ] | 2027-04-20 → 2027-04-27 (+7d) | 2027-05-08 → 2027-05-19 (+11d) |  | -0.98d → -2.88d |
| CON-LEG101-LR-2510 | Installation of Fire Hydrant [Local – 04 ] | 2027-05-08 → 2027-05-19 (+11d) | 2027-05-30 → 2027-06-06 (+7d) |  | -0.98d → -2.88d |

| ID | Task | Start | Finish | Complete | Total float |
| --- | --- | --- | --- | --- | --- |
| 6 | **Public Water Utility Distribution** |  | 2027-05-10 → 2027-05-22 (+12d) |  |  |
| 2 | **Pipe Work** |  | 2027-02-18 → 2027-02-27 (+9d) |  |  |
| CON-LEG101-LR-10090 | Excavation for Public Water Utility Distribution Piping [Local – 04 ] |  | 2027-01-16 → 2027-01-23 (+7d) |  | -16.7d → -18.6d |
| CON-LEG101-LR-10190 | Granular bedding for Public Water Utility Distribution Piping [Local – 04 ] |  | 2027-01-17 → 2027-01-24 (+7d) |  | -16.7d → -18.6d |
| CON-LEG101-LR-10290 | Installation of Pipe for Public Water Utility Distribution Piping [Local – 04 ] |  | 2027-01-24 → 2027-01-31 (+7d) |  | -16.7d → -18.6d |
| CON-LEG101-LR-10590 | Granular Surround for Public Water Utility Distribution Piping [Local – 04 ] |  | 2027-02-06 → 2027-02-17 (+11d) |  | -16.7d → -18.6d |
| CON-LEG101-LR-10390 | Testing for Public Water Utility Distribution Piping [Local – 04 ] | 2027-01-24 → 2027-01-31 (+7d) | 2027-01-30 → 2027-02-06 (+7d) |  | -16.7d → -18.6d |
| CON-LEG101-LR-10490 | Concrete encasement, pipe dia 110 mm [Local – 04 ] | 2027-01-30 → 2027-02-06 (+7d) | 2027-02-02 → 2027-02-14 (+12d) |  | -16.7d → -18.6d |
| CON-LEG101-LR-10690 | Installation of Micron Marker Magnetic Tape [Local – 04 ] | 2027-02-06 → 2027-02-17 (+11d) | 2027-02-14 → 2027-02-21 (+7d) |  | -16.7d → -18.6d |
| CON-LEG101-LR-10790 | Backfilling to Subgrade Elevation [Local – 04 ] | 2027-02-14 → 2027-02-21 (+7d) | 2027-02-18 → 2027-02-27 (+9d) |  | -16.7d → -18.6d |
| 1 | **Valves/Chamber** | 2027-04-03 → 2027-04-10 (+7d) | 2027-05-10 → 2027-05-22 (+12d) |  |  |
| CON-LEG101-LR-1280 | Installation of Air Valve chambers [Local – 04 ] | 2027-04-03 → 2027-04-10 (+7d) | 2027-04-26 → 2027-05-03 (+7d) |  | 63.92d → 60.92d |
| CON-LEG101-LR-1050 | Installation of Gate (Sluice) valves (Direct buried) [Local – 04 ] | 2027-04-26 → 2027-05-03 (+7d) | 2027-05-03 → 2027-05-10 (+7d) |  | 63.92d → 60.92d |
| CON-LEG101-LR-1180 | Installation of Air Valves [Local – 04 ] | 2027-05-03 → 2027-05-10 (+7d) | 2027-05-10 → 2027-05-22 (+12d) |  | 63.92d → 60.92d |
| 8 | **Electrical Works** | 2027-06-24 → 2027-07-01 (+7d) | 2027-08-08 → 2027-08-15 (+7d) |  |  |
| 3 | **Low Voltage** | 2027-06-24 → 2027-07-01 (+7d) | 2027-08-08 → 2027-08-15 (+7d) |  |  |
| CON-LEG101-LR-7830 | Excavation works for Low Voltage Cables [Local – 04 ] | 2027-06-24 → 2027-07-01 (+7d) | 2027-07-08 → 2027-07-15 (+7d) |  | -119.5d → -121.4d |
| CON-LEG101-LR-8030 | Installation of Low Voltage Cables Duct Banks [Local – 04 ] | 2027-07-10 → 2027-07-17 (+7d) | 2027-07-20 → 2027-07-27 (+7d) |  | -119.5d → -121.4d |
| CON-LEG101-LR-7930 | Installation of Low Voltage Cables [Local – 04 ] | 2027-07-21 → 2027-07-28 (+7d) | 2027-08-04 → 2027-08-11 (+7d) |  | -58.5d → -63.4d |
| CON-LEG101-LR-8810 | Installation of Earthing System [Local – 04 ] | 2027-08-05 → 2027-08-12 (+7d) | 2027-08-08 → 2027-08-15 (+7d) |  | -57.4d → -63.4d |
| 10 | **Telecommunications** | 2027-07-21 → 2027-07-28 (+7d) | 2027-10-16 → 2027-10-23 (+7d) |  |  |
| CON-LEG101-LR-8880 | Installation of Sand and soil encased duct banks for primary network [Local – 04 ] | 2027-07-21 → 2027-07-28 (+7d) | 2027-08-09 → 2027-08-16 (+7d) |  | -119.5d → -121.4d |
| CON-LEG101-LR-8980 | Installation of Concrete encased duct banks for primary network [Local – 04 ] | 2027-08-10 → 2027-08-17 (+7d) | 2027-08-16 → 2027-08-23 (+7d) |  | -119.5d → -121.4d |
| CON-LEG101-LR-9080 | Installation of Sand encased duct banks for secondary network [Local – 04 ] | 2027-08-17 → 2027-08-24 (+7d) | 2027-08-24 → 2027-08-31 (+7d) |  | -119.5d → -121.4d |
| CON-LEG101-LR-9180 | Installation of Sand and soil encased duct banks, for combined network of primary and secondary [Local – 04 ] | 2027-08-25 → 2027-09-01 (+7d) | 2027-09-14 → 2027-09-21 (+7d) |  | -119.5d → -121.4d |
| CON-LEG101-LR-9280 | Installation of Concrete encased duct banks for for combined network of primary and secondary [Local – 04 ] | 2027-09-15 → 2027-09-22 (+7d) | 2027-09-20 → 2027-09-28 (+8d) |  | -119.5d → -121.4d |
| CON-LEG101-LR-9380 | Installation of Reinforced concrete manhole [Local – 04 ] | 2027-09-21 → 2027-09-29 (+8d) | 2027-10-16 → 2027-10-23 (+7d) |  | -119.5d → -121.4d |
| 11 | **CCTV feeding system and GSM** | 2027-08-10 → 2027-08-17 (+7d) | 2027-10-21 → 2027-10-28 (+7d) |  |  |
| CON-LEG101-LR-8600 | Excavation works for Low Voltage Cables for CCTV feeding system and GSM [Local – 04 ] | 2027-08-10 → 2027-08-17 (+7d) | 2027-08-23 → 2027-08-30 (+7d) |  | -58.4d → -64.4d |
| CON-LEG101-LR-8670 | Installation of Low Voltage Cables for CCTV feeding system and GSM [Local – 04 ] | 2027-08-24 → 2027-08-31 (+7d) | 2027-09-07 → 2027-09-14 (+7d) |  | -58.4d → -64.4d |
| CON-LEG101-LR-9490 | Installation of 8POE ports Industrial Switches for remote poles [Local – 04 ] | 2027-09-08 → 2027-09-15 (+7d) | 2027-09-15 → 2027-09-22 (+7d) |  | -58.4d → -64.4d |
| CON-LEG101-LR-9660 | Installation of IP Outdoor CCTV POE Camera,5 MP, Metal Housing [Local – 04 ] | 2027-09-16 → 2027-09-25 (+9d) | 2027-09-26 → 2027-10-03 (+7d) |  | -58.4d → -64.4d |
| CON-LEG101-LR-9740 | Installation of Outdoor PTZ IP66 [Local – 04 ] | 2027-09-27 → 2027-10-04 (+7d) | 2027-10-07 → 2027-10-14 (+7d) |  | -58.4d → -64.4d |
| CON-LEG101-LR-9990 | Installation of Short Range wireless point to point wireless bridge [Local – 04 ] | 2027-10-09 → 2027-10-16 (+7d) | 2027-10-21 → 2027-10-28 (+7d) |  | -58.4d → -64.4d |
| 12 | **Earthing System** | 2027-10-23 → 2027-10-30 (+7d) | 2027-10-31 → 2027-11-07 (+7d) |  |  |
| CON-LEG101-LR-15160 | Installation of Earthing for Distribution panels,SL feeder pillars, KWH, Unit substations and RMU [Local – 04 ] | 2027-10-23 → 2027-10-30 (+7d) | 2027-10-31 → 2027-11-07 (+7d) |  | -58.4d → -64.4d |
| 9 | **Road Lighting** | 2027-07-10 → 2027-07-17 (+7d) | 2027-09-25 → 2027-10-02 (+7d) |  |  |
| CON-LEG101-LR-8130 | Installation of Lighting poles [Local – 04 ] | 2027-07-10 → 2027-07-17 (+7d) | 2027-07-29 → 2027-08-05 (+7d) |  | -53.5d → -55.4d |
| CON-LEG101-LR-8230 | Installation of Street Lighting Luminaire [Local – 04 ] | 2027-07-31 → 2027-08-07 (+7d) | 2027-08-05 → 2027-08-12 (+7d) |  | -20.4d → -26.4d |
| CON-LEG101-LR-7450 | Installation of Unit Substation Including concrete foundations and fencing [Local – 04 ] | 2027-08-24 → 2027-08-31 (+7d) | 2027-08-31 → 2027-09-07 (+7d) |  | -35.4d → -41.4d |
| CON-LEG101-LR-7530 | Installation of Ring Main Unit RMU [Local – 04 ] | 2027-09-01 → 2027-09-08 (+7d) | 2027-09-16 → 2027-09-25 (+9d) |  | -35.4d → -41.4d |
| CON-LEG101-LR-8380 | Installation of Earthing for Streetlighting feeders for every end pole circuits. [Local – 04 ] | 2027-09-18 → 2027-09-26 (+8d) | 2027-09-25 → 2027-10-02 (+7d) |  | -35.4d → -41.4d |
| 5 | **Local – 05** |  | 2027-08-16 → 2027-08-23 (+7d) |  |  |
| 5 | **TSE Network** |  | 2026-12-26 → 2027-01-02 (+7d) |  |  |
| 1 | **Valves/Chamber** |  | 2026-12-26 → 2027-01-02 (+7d) |  |  |
| CON-LEG101-LR-2740 | Installation of Air Valve chambers [Local – 05 ] |  | 2026-12-26 → 2027-01-02 (+7d) |  | 175.24d → 172.24d |
| CON-LEG101-LR-2660 | Installation of Wash out chambers [Local – 05 ] |  | 2026-12-24 → 2026-12-31 (+7d) |  | 175.24d → 172.24d |
| 6 | **Public Water Utility Distribution** |  | 2026-12-27 → 2027-01-03 (+7d) |  |  |
| 1 | **Valves/Chamber** |  | 2026-12-27 → 2027-01-03 (+7d) |  |  |
| CON-LEG101-LR-1240 | Installation of Wash out chambers [Local – 05 ] |  | 2026-12-27 → 2027-01-03 (+7d) |  | 196.44d → 190.44d |
| 1 | **Electrical Works** |  | 2027-06-30 → 2027-07-07 (+7d) |  |  |
| 3 | **Low Voltage** |  | 2027-06-30 → 2027-07-07 (+7d) |  |  |
| CON-LEG101-LR-8820 | Installation of Earthing System [Local – 05 ] | 2027-06-29 → 2027-07-06 (+7d) | 2027-06-30 → 2027-07-07 (+7d) |  | 23.4d → 20.4d |
| 10 | **Telecommunications** |  | 2027-06-30 → 2027-07-07 (+7d) |  |  |
| CON-LEG101-LR-9090 | Installation of Sand encased duct banks for secondary network [Local – 05 ] |  | 2027-06-29 → 2027-07-06 (+7d) |  | 23.6d → 20.6d |
| CON-LEG101-LR-9190 | Installation of Sand and soil encased duct banks, for combined network of primary and secondary [Local – 05 ] |  | 2027-06-30 → 2027-07-07 (+7d) |  | 23.6d → 20.6d |
| 11 | **CCTV feeding system and GSM** |  | 2027-07-12 → 2027-07-19 (+7d) |  |  |
| CON-LEG101-LR-9600 | Installation of Stand rack 42U- 19" [Local – 05 ] | 2027-07-01 → 2027-07-08 (+7d) | 2027-07-04 → 2027-07-11 (+7d) |  | 38.6d → 33.4d |
| CON-LEG101-LR-9810 | Installation of LED Screen 43" (24/7 operation) with Ethernet decoders [Local – 05 ] | 2027-07-11 → 2027-07-18 (+7d) | 2027-07-12 → 2027-07-19 (+7d) |  | 33.6d → 28.4d |
| 12 | **Earthing System** | 2027-08-12 → 2026-11-23 (-262d) | 2027-08-15 → 2027-08-22 (+7d) |  |  |
| CON-LEG101-LR-15150 | Installation of Earthing for Distribution panels,SL feeder pillars, KWH, Unit substations and RMU [Local – 05 ] | 2027-08-12 → 2026-11-23 A (-262d) | 2027-08-15 → 2027-08-22 (+7d) | 0% → 40% | 6.7d → 1.5d |
| 9 | **Road Lighting** |  | 2027-08-16 → 2027-08-23 (+7d) |  |  |
| CON-LEG101-LR-7460 | Installation of Unit Substation Including concrete foundations and fencing [Local – 05 ] |  | 2027-08-04 → 2027-08-11 (+7d) |  | 5.7d → 0.2d |
| CON-LEG101-LR-8390 | Installation of Earthing for Streetlighting feeders for every end pole circuits. [Local – 05 ] |  | 2027-08-16 → 2027-08-23 (+7d) | 40% → 50% | 5.7d → 0.2d |
| CON-LEG101-LR-7540 | Installation of Ring Main Unit RMU [Local – 05 ] | 2027-08-04 → 2027-08-11 (+7d) | 2027-08-12 → 2027-08-19 (+7d) |  | 5.7d → 0.2d |
| 6 | **Local – 06** |  | 2027-08-10 → 2027-08-16 (+6d) |  |  |
| 12 | **Earthing System** | 2027-08-07 → 2026-11-23 (-257d) | 2027-08-10 → 2027-08-16 (+6d) |  |  |
| CON-LEG101-LR-15140 | Installation of Earthing for Distribution panels,SL feeder pillars, KWH, Unit substations and RMU [Local – 06 ] | 2027-08-07 → 2026-11-23 A (-257d) | 2027-08-10 → 2027-08-16 (+6d) | 0% → 40% | 10.8d → 6d |
| 9 | **Road Lighting** |  | 2027-08-09 → 2027-08-16 (+7d) |  |  |
| CON-LEG101-LR-7470 | Installation of Unit Substation Including concrete foundations and fencing [Local – 06 ] |  | 2027-08-02 → 2027-08-09 (+7d) |  | 10.8d → 6d |

| ID | Task | Start | Finish | Complete | Total float |
| --- | --- | --- | --- | --- | --- |
| CON-LEG101-LR-8400 | Installation of Earthing for Streetlighting feeders for every end pole circuits. [Local – 06 ] |  | 2027-08-09 → 2027-08-16 (+7d) | 30% → 50% | 11.7d → 6.3d |
| CON-LEG101-LR-7550 | Installation of Ring Main Unit RMU [Local – 06 ] | 2027-08-02 → 2027-08-09 (+7d) | 2027-08-07 → 2027-08-14 (+7d) |  | 10.8d → 6d |
| 7 | **Local – 07** |  | 2027-08-12 → 2027-08-17 (+5d) |  |  |
| 12 | **Earthing System** | 2027-08-08 → 2026-11-23 (-258d) | 2027-08-12 → 2027-08-17 (+5d) |  |  |
| CON-LEG101-LR-15130 | Installation of Earthing for Distribution panels,SL feeder pillars, KWH, Unit substations and RMU [Local – 07 ] | 2027-08-08 → 2026-11-23 A (-258d) | 2027-08-12 → 2027-08-17 (+5d) | 0% → 50% | 9.4d → 5.4d |
| 9 | **Road Lighting** |  | 2027-08-10 → 2027-08-17 (+7d) |  |  |
| CON-LEG101-LR-7480 | Installation of Unit Substation Including concrete foundations and fencing [Local – 07 ] |  | 2027-08-03 → 2027-08-10 (+7d) |  | 9.4d → 5.4d |
| CON-LEG101-LR-8410 | Installation of Earthing for Streetlighting feeders for every end pole circuits. [Local – 07 ] |  | 2027-08-10 → 2027-08-17 (+7d) |  | 11.4d → 5.4d |
| CON-LEG101-LR-7560 | Installation of Ring Main Unit RMU [Local – 07 ] | 2027-08-03 → 2027-08-10 (+7d) | 2027-08-08 → 2027-08-15 (+7d) |  | 9.4d → 5.4d |
| 8 | **Local – 08** |  | 2027-08-10 → 2027-08-17 (+7d) |  |  |
| 5 | **TSE Network** |  | 2026-12-26 → 2027-01-02 (+7d) |  |  |
| 1 | **Valves/Chamber** |  | 2026-12-26 → 2027-01-02 (+7d) |  |  |
| CON-LEG101-LR-2750 | Installation of Air Valve chambers [Local – 08 ] |  | 2026-12-26 → 2027-01-02 (+7d) |  | 182.7d → 178.7d |
| CON-LEG101-LR-2670 | Installation of Wash out chambers [Local – 08 ] |  | 2026-12-24 → 2026-12-31 (+7d) |  | 182.7d → 178.7d |
| 1 | **Electrical Works** |  | 2027-07-18 → 2027-07-25 (+7d) |  |  |
| 3 | **Low Voltage** |  | 2027-07-18 → 2027-07-25 (+7d) |  |  |
| CON-LEG101-LR-8500 | Installation of Low Voltage Distribution Panel [Local – 08 ] | 2027-07-11 → 2027-07-18 (+7d) | 2027-07-18 → 2027-07-25 (+7d) |  | 13.8d → 9.8d |
| 11 | **CCTV feeding system and GSM** |  | 2027-07-18 → 2027-07-25 (+7d) |  |  |
| CON-LEG101-LR-9820 | Installation of LED Screen 43" (24/7 operation) with Ethernet decoders [Local – 08 ] | 2027-07-11 → 2027-07-18 (+7d) | 2027-07-18 → 2027-07-25 (+7d) |  | 13.8d → 9.8d |
| 12 | **Earthing System** | 2027-08-08 → 2027-08-15 (+7d) | 2027-08-10 → 2027-08-17 (+7d) |  |  |
| CON-LEG101-LR-8320 | Installation of Earthing for Distribution panels,SL feeder pillars, KWH, Unit substations and RMU [Local – 08 ] | 2027-08-08 → 2027-08-15 (+7d) | 2027-08-10 → 2027-08-17 (+7d) |  | -3.4d → -7.4d |
| 9 | **Road Lighting** |  | 2027-08-10 → 2027-08-17 (+7d) |  |  |
| CON-LEG101-LR-7490 | Installation of Unit Substation Including concrete foundations and fencing [Local – 08 ] |  | 2027-08-02 → 2027-08-09 (+7d) |  | -3.4d → -7.4d |
| CON-LEG101-LR-8470 | Installation of Street Lighting feeder pillars / Lighting panels [Local – 08 ] |  | 2027-08-08 → 2027-08-15 (+7d) |  | -3.4d → -7.4d |
| CON-LEG101-LR-7570 | Installation of Ring Main Unit RMU [Local – 08 ] | 2027-08-02 → 2027-08-09 (+7d) | 2027-08-07 → 2027-08-14 (+7d) |  | -3.4d → -7.4d |
| CON-LEG101-LR-8420 | Installation of Earthing for Streetlighting feeders for every end pole circuits. [Local – 08 ] | 2027-08-08 → 2027-08-15 (+7d) | 2027-08-10 → 2027-08-17 (+7d) |  | 11.4d → 5.4d |
| 3 | **Bridge** |  | 2027-09-05 → 2027-09-04 (-1d) |  |  |
| 3 | **Bridge Finishing** |  | 2027-09-05 → 2027-09-04 (-1d) |  |  |
| CON-LEG101-BR-1210 | Installation of GRP Panel [Bridge ] |  | 2027-08-24 → 2027-08-23 (-1d) | 40% → 50% | -43d → -42d |
| CON-LEG101-BR-1200 | Installation of Guard Rail [Bridge ] |  |  | 20% → 50% | -43d → -42d |
| CON-LEG101-BR-1160 | Membrane waterproofing for concert in touch with soil and membrane waterproofing for bridge slab [Bridge ] | 2026-11-18 → 2026-11-25 (+7d) | 2026-11-29 → 2026-12-06 (+7d) |  | 126d → 127d |
| CON-LEG101-BR-1170 | Placing of Protective Coating for Concrete Surfaces [Bridge ] | 2026-11-30 → 2026-12-07 (+7d) | 2026-12-14 → 2026-12-21 (+7d) |  | 126d → 127d |
| CON-LEG101-BR-1260 | Asphalt Wearing Cource | 2026-12-15 → 2026-12-22 (+7d) | 2026-12-17 → 2026-12-24 (+7d) |  | 126d → 127d |
| CON-LEG101-BR-1190 | Installation of expansion joints for bridges [Bridge ] | 2026-12-19 → 2026-12-26 (+7d) | 2027-01-03 → 2027-01-10 (+7d) |  | 126d → 127d |
| CON-LEG101-BR-1220 | Installation of Logo MODON [Bridge ] | 2027-08-25 → 2027-08-24 (-1d) | 2027-09-05 → 2027-09-04 (-1d) |  | -43d → -42d |
| 4 | **Outside Boundary Area (Tie-in Lines)** |  | 2027-07-18 → 2027-07-25 (+7d) |  |  |
| 3 | **TSE Network** |  | 2027-07-18 → 2027-07-25 (+7d) |  |  |
| 1 | **Valves/Chamber** |  | 2027-07-18 → 2027-07-25 (+7d) |  |  |
| CON-LEG101-OBA-1070 | Installation of Butterfly valves (In Chamber) [Outside Boundary Area ] |  | 2027-07-18 → 2027-07-25 (+7d) |  | -0.82d → -6.82d |
| CON-LEG101-OBA-1500 | Installation of Valve Chamber [Outside Boundary Area ] |  | 2027-07-18 → 2027-07-25 (+7d) |  | -0.82d → -6.82d |
| 5 | **Public Water Utility Distribution** |  | 2026-11-21 → 2026-11-28 (+7d) |  |  |
| 3 | **Public Water Utility Distribution (0 - 900) m** |  | 2026-11-19 → 2026-11-26 (+7d) |  |  |
| 1 | **Valves/Chamber** |  | 2026-11-19 → 2026-11-26 (+7d) |  |  |
| CON-LEG101-OBA-1420 | Installation of Air Valve chambers [Outside Boundary Area ] 0 - 900 m |  | 2026-11-19 → 2026-11-26 (+7d) |  | 195.21d → 189.33d |
| CON-LEG101-OBA-1430 | Installation of Air Valves [Outside Boundary Area ] 0 - 900 m |  | 2026-11-19 → 2026-11-26 (+7d) |  | 195.21d → 189.33d |
| 1 | **Public Water Utility Distribution (901 - 1800) m** |  | 2026-11-21 → 2026-11-28 (+7d) |  |  |
| 1 | **Valves/Chamber** |  | 2026-11-21 → 2026-11-28 (+7d) |  |  |
| CON-LEG101-OBA-1440 | Installation of Air Valve chambers [Outside Boundary Area ] 901 - 1800 m |  | 2026-11-19 → 2026-11-26 (+7d) |  | 195.21d → 189.33d |
| CON-LEG101-OBA-1450 | Installation of Air Valves [Outside Boundary Area ] 901 - 1800 m |  | 2026-11-21 → 2026-11-28 (+7d) |  | 195.21d → 189.33d |
| CON-LEG101-OBA-1510 | Installation of Butterfly valves, on pipe with diameter 400 mm |  | 2026-11-21 → 2026-11-12 A (-9d) | 98% → 100% | 195.21d → none |
| 8 | **Roads Finishing** |  | 2028-01-05 → 2028-01-12 (+7d) |  |  |
| 1 | **Local – 01** |  | 2027-11-02 → 2027-11-08 (+6d) |  |  |
| 1 | **LOCAL - 01 Segment-01 (From 0+000 to 1+066)** |  | 2027-09-28 → 2027-09-29 (+1d) |  |  |
| 1 | **Asphalt Wearing Course** |  | 2027-08-24 → 2027-08-30 (+6d) |  |  |
| CON-LEG101-LR-5980 | Tack coat (RC2) [Local – 01 Segment-01] |  | 2027-08-22 → 2027-08-28 (+6d) |  | -59.85d → -64.65d |
| CON-LEG101-LR-6080 | Bituminous wearing course [Local – 01 Segment-01] |  | 2027-08-24 → 2027-08-30 (+6d) |  | -59.85d → -64.65d |
| 5 | **Pavement Markings** |  | 2027-09-08 → 2027-09-14 (+6d) |  |  |
| CON-LEG101-LR-6580 | Pavement Markings (White Paint/Yellow Paint) [Local – 01 Segment-01] |  | 2027-08-28 → 2027-09-02 (+5d) | 50% → 60% | -59.85d → -64.65d |
| CON-LEG101-LR-6680 | Handicap ramp [Local – 01 Segment-01] | 2027-08-28 → 2027-09-02 (+5d) | 2027-09-08 → 2027-09-14 (+6d) |  | -59.85d → -64.65d |
| 6 | **Traffic Signs** |  | 2027-09-28 → 2027-09-29 (+1d) |  |  |
| CON-LEG101-LR-6780 | Installation of Traffic Signs [Local – 01 Segment-01] |  | 2027-09-28 → 2027-09-29 (+1d) | 60% → 80% | -38.65d → -39.65d |
| CON-LEG101-LR-6480 | Retroreflective Plastic Cones [Local – 01 Segment-01] | 2027-09-08 → 2027-09-14 (+6d) | 2027-09-19 → 2027-09-26 (+7d) |  | -58.85d → -63.65d |
| 2 | **LOCAL - 01 Segment-02 (From 1+066 to 2+133)** |  | 2027-10-10 → 2027-10-16 (+6d) |  |  |
| 1 | **Asphalt Wearing Course** |  | 2027-08-28 → 2027-09-04 (+7d) |  |  |
| CON-LEG101-LR-5990 | Tack coat (RC2) [Local – 01 Segment-02] |  | 2027-08-26 → 2027-09-01 (+6d) |  | -55.05d → -60.45d |
| CON-LEG101-LR-6090 | Bituminous wearing course [Local – 01 Segment-02] |  | 2027-08-28 → 2027-09-04 (+7d) |  | -55.05d → -60.45d |
| 5 | **Pavement Markings** |  | 2027-09-20 → 2027-09-27 (+7d) |  |  |
| CON-LEG101-LR-6590 | Pavement Markings (White Paint/Yellow Paint) [Local – 01 Segment-02] |  | 2027-09-05 → 2027-09-09 (+4d) | 50% → 60% | -57.35d → -60.65d |
| CON-LEG101-LR-6690 | Handicap ramp [Local – 01 Segment-02] | 2027-09-08 → 2027-09-14 (+6d) | 2027-09-20 → 2027-09-27 (+7d) |  | -59.85d → -64.65d |
| 6 | **Traffic Signs** |  | 2027-10-10 → 2027-10-16 (+6d) |  |  |

| ID | Task | Start | Finish | Complete | Total float |
| --- | --- | --- | --- | --- | --- |
| CON-LEG101-LR-6790 | Installation of Traffic Signs [Local – 01 Segment-02] |  | 2027-10-10 → 2027-10-16 (+6d) |  | -44.05d → -48.85d |
| CON-LEG101-LR-6490 | Retroreflective Plastic Cones [Local – 01 Segment-02] | 2027-09-20 → 2027-09-27 (+7d) | 2027-10-05 → 2027-10-11 (+6d) |  | -59.85d → -64.65d |
| 3 | **LOCAL - 01 Segment-03 (From 2+133 to 3+200)** |  | 2027-11-02 → 2027-11-08 (+6d) |  |  |
| 1 | **Asphalt Wearing Course** |  | 2027-08-29 → 2027-09-05 (+7d) |  |  |
| CON-LEG101-LR-6000 | Tack coat (RC2) [Local – 01 Segment-03] |  | 2027-08-29 → 2027-09-04 (+6d) |  | -55.05d → -60.45d |
| CON-LEG101-LR-6100 | Bituminous wearing course [Local – 01 Segment-03] |  | 2027-08-29 → 2027-09-05 (+7d) |  | -55.05d → -60.45d |
| 5 | **Pavement Markings** |  | 2027-10-05 → 2027-10-11 (+6d) |  |  |
| CON-LEG101-LR-6600 | Pavement Markings (White Paint/Yellow Paint) [Local – 01 Segment-03] |  | 2027-09-11 → 2027-09-12 (+1d) | 50% → 80% | -52.35d → -52.65d |
| CON-LEG101-LR-6700 | Handicap ramp [Local – 01 Segment-03] | 2027-09-20 → 2027-09-27 (+7d) | 2027-10-05 → 2027-10-11 (+6d) |  | -59.85d → -64.65d |
| 6 | **Traffic Signs** |  | 2027-11-02 → 2027-11-08 (+6d) |  |  |
| CON-LEG101-LR-6800 | Installation of Traffic Signs [Local – 01 Segment-03] |  | 2027-11-02 → 2027-11-08 (+6d) |  | -59.85d → -64.65d |
| CON-LEG101-LR-6500 | Retroreflective Plastic Cones [Local – 01 Segment-03] | 2027-10-05 → 2027-10-11 (+6d) | 2027-10-28 → 2027-11-03 (+6d) |  | -59.85d → -64.65d |
| 2 | **Local – 02** |  | 2027-10-16 → 2027-10-13 (-3d) |  |  |
| 4 | **Interlocking block sidewalk/footpath** |  | 2027-09-01 → 2027-09-07 (+6d) |  |  |
| CON-LEG101-LR-6310 | Interlocking block pavers for sidewalk/footpath [Local – 02 ] |  | 2027-09-01 → 2027-09-07 (+6d) | 85% → 90% | -8.2d → -12.55d |
| 5 | **Pavement Markings** |  | 2027-09-29 → 2027-09-27 (-2d) |  |  |
| CON-LEG101-LR-6610 | Pavement Markings (White Paint/Yellow Paint) [Local – 02 ] |  | 2027-09-16 → 2027-09-14 (-2d) | 50% → 80% | -45.35d → -42.65d |
| CON-LEG101-LR-6710 | Handicap ramp [Local – 02 ] | 2027-09-16 → 2027-09-14 (-2d) | 2027-09-29 → 2027-09-27 (-2d) |  | -45.35d → -42.65d |
| 6 | **Traffic Signs** |  | 2027-10-16 → 2027-10-13 (-3d) |  |  |
| CON-LEG101-LR-6810 | Installation of Traffic Signs [Local – 02 ] |  | 2027-10-16 → 2027-10-13 (-3d) |  | -45.35d → -42.65d |
| CON-LEG101-LR-6510 | Retroreflective Plastic Cones [Local – 02 ] | 2027-09-29 → 2027-09-27 (-2d) | 2027-10-11 → 2027-10-09 (-2d) |  | -45.35d → -42.65d |
| 3 | **Local – 03** |  | 2027-10-04 → 2027-10-10 (+6d) |  |  |
| 1 | **Asphalt Wearing Course** |  | 2027-08-30 → 2027-09-06 (+7d) |  |  |
| CON-LEG101-LR-6020 | Tack coat (RC2) [Local – 03 ] |  | 2027-08-30 → 2027-09-05 (+6d) |  | -55.05d → -60.45d |
| CON-LEG101-LR-6120 | Bituminous wearing course [Local – 03 ] |  | 2027-08-30 → 2027-09-06 (+7d) |  | -55.05d → -60.45d |
| 5 | **Pavement Markings** |  | 2027-09-16 → 2027-09-22 (+6d) |  |  |
| CON-LEG101-LR-6620 | Pavement Markings (White Paint/Yellow Paint) [Local – 03 ] |  | 2027-09-05 → 2027-09-11 (+6d) | 50% → 60% | -35.05d → -39.45d |
| CON-LEG101-LR-6720 | Handicap ramp [Local – 03 ] | 2027-09-05 → 2027-09-11 (+6d) | 2027-09-16 → 2027-09-22 (+6d) |  | -35.05d → -39.45d |
| 6 | **Traffic Signs** |  | 2027-10-04 → 2027-10-10 (+6d) |  |  |
| CON-LEG101-LR-6820 | Installation of Traffic Signs [Local – 03 ] |  | 2027-10-04 → 2027-10-10 (+6d) |  | -35.05d → -39.45d |
| CON-LEG101-LR-6520 | Retroreflective Plastic Cones [Local – 03 ] | 2027-09-16 → 2027-09-22 (+6d) | 2027-09-29 → 2027-10-05 (+6d) |  | -35.05d → -39.45d |
| 4 | **Local – 04** | 2027-10-17 → 2027-10-24 (+7d) | 2028-01-05 → 2028-01-12 (+7d) |  |  |
| 7 | **Concrete Curb** | 2027-10-17 → 2027-10-24 (+7d) | 2027-11-09 → 2027-11-16 (+7d) |  |  |
| CON-LEG101-LR-6230 | Installation of Precast Concrete Curb [Local – 04 ] | 2027-10-17 → 2027-10-24 (+7d) | 2027-11-09 → 2027-11-16 (+7d) |  | -119.5d → -121.4d |
| 1 | **Asphalt Wearing Course** | 2027-11-10 → 2027-11-17 (+7d) | 2027-11-15 → 2027-11-22 (+7d) |  |  |
| CON-LEG101-LR-6030 | Tack coat (RC2) [Local – 04 ] | 2027-11-10 → 2027-11-17 (+7d) | 2027-11-11 → 2027-11-18 (+7d) |  | -115.4d → -121.4d |
| CON-LEG101-LR-6130 | Bituminous wearing course [Local – 04 ] | 2027-11-13 → 2027-11-20 (+7d) | 2027-11-15 → 2027-11-22 (+7d) |  | -115.4d → -121.4d |
| 3 | **Interlocking block roads/on-street parking** | 2027-11-16 → 2027-11-23 (+7d) | 2027-12-07 → 2027-12-14 (+7d) |  |  |
| CON-LEG101-LR-6430 | Interlocking block pavers for roads/on-street parking [Local – 04 ] | 2027-11-16 → 2027-11-23 (+7d) | 2027-12-07 → 2027-12-14 (+7d) |  | -109.4d → -115.4d |
| 4 | **Interlocking block sidewalk/footpath** | 2027-12-08 → 2027-12-15 (+7d) | 2027-12-29 → 2028-01-05 (+7d) |  |  |
| CON-LEG101-LR-6330 | Interlocking block pavers for sidewalk/footpath [Local – 04 ] | 2027-12-08 → 2027-12-15 (+7d) | 2027-12-29 → 2028-01-05 (+7d) |  | -109.4d → -115.4d |
| 5 | **Pavement Markings** | 2027-11-16 → 2027-11-23 (+7d) | 2027-12-08 → 2027-12-15 (+7d) |  |  |
| CON-LEG101-LR-6630 | Pavement Markings (White Paint/Yellow Paint) [Local – 04 ] | 2027-11-16 → 2027-11-23 (+7d) | 2027-11-27 → 2027-12-04 (+7d) |  | -115.4d → -121.4d |
| CON-LEG101-LR-6730 | Handicap ramp [Local – 04 ] | 2027-11-28 → 2027-12-05 (+7d) | 2027-12-08 → 2027-12-15 (+7d) |  | -115.4d → -121.4d |
| 6 | **Traffic Signs** | 2027-12-09 → 2027-12-16 (+7d) | 2028-01-05 → 2028-01-12 (+7d) |  |  |
| CON-LEG101-LR-6530 | Retroreflective Plastic Cones [Local – 04 ] | 2027-12-09 → 2027-12-16 (+7d) | 2027-12-20 → 2027-12-27 (+7d) |  | -115.4d → -121.4d |
| CON-LEG101-LR-6830 | Installation of Traffic Signs [Local – 04 ] | 2027-12-21 → 2027-12-28 (+7d) | 2028-01-05 → 2028-01-12 (+7d) |  | -115.4d → -121.4d |
| 5 | **Local – 05** |  | 2027-12-12 → 2027-12-15 (+3d) |  |  |
| 5 | **Pavement Markings** |  | 2027-12-02 → 2027-12-06 (+4d) |  |  |
| CON-LEG101-LR-6640 | Pavement Markings (White Paint/Yellow Paint) [Local – 05 ] |  | 2027-11-21 → 2027-11-24 (+3d) | 50% → 80% | -93.6d → -96.6d |
| CON-LEG101-LR-6740 | Handicap ramp [Local – 05 ] | 2027-11-22 → 2027-11-25 (+3d) | 2027-12-02 → 2027-12-06 (+4d) |  | -93.6d → -96.6d |
| 6 | **Traffic Signs** |  | 2027-12-12 → 2027-12-15 (+3d) |  |  |
| CON-LEG101-LR-6840 | Installation of Traffic Signs [Local – 05 ] |  | 2027-12-12 → 2027-12-15 (+3d) |  | -93.6d → -96.6d |
| CON-LEG101-LR-6540 | Retroreflective Plastic Cones [Local – 05 ] | 2027-12-04 → 2027-12-07 (+3d) | 2027-12-08 → 2027-12-12 (+4d) |  | -93.6d → -96.6d |
| 6 | **Local – 06** |  | 2027-12-11 → 2027-12-14 (+3d) |  |  |
| 5 | **Pavement Markings** |  | 2027-12-02 → 2027-12-06 (+4d) |  |  |
| CON-LEG101-LR-6650 | Pavement Markings (White Paint/Yellow Paint) [Local – 06 ] |  | 2027-11-21 → 2027-11-24 (+3d) | 50% → 80% | -93.4d → -96.4d |
| CON-LEG101-LR-6750 | Handicap ramp [Local – 06 ] | 2027-11-22 → 2027-11-25 (+3d) | 2027-12-02 → 2027-12-06 (+4d) |  | -93.4d → -96.4d |
| 6 | **Traffic Signs** |  | 2027-12-11 → 2027-12-14 (+3d) |  |  |
| CON-LEG101-LR-6850 | Installation of Traffic Signs [Local – 06 ] |  | 2027-12-11 → 2027-12-14 (+3d) |  | -93.4d → -96.4d |
| CON-LEG101-LR-6550 | Retroreflective Plastic Cones [Local – 06 ] | 2027-12-04 → 2027-12-07 (+3d) | 2027-12-07 → 2027-12-11 (+4d) |  | -93.4d → -96.4d |
| 7 | **Local – 07** |  | 2027-11-27 → 2027-12-02 (+5d) |  |  |
| 1 | **Asphalt Wearing Course** |  | 2027-11-11 → 2027-11-18 (+7d) |  |  |
| CON-LEG101-LR-6060 | Tack coat (RC2) [Local – 07 ] |  | 2027-11-10 → 2027-11-17 (+7d) |  | -81.1d → -85.6d |
| CON-LEG101-LR-6160 | Bituminous wearing course [Local – 07 ] |  | 2027-11-11 → 2027-11-18 (+7d) |  | -81.1d → -85.6d |
| 5 | **Pavement Markings** |  | 2027-11-18 → 2027-11-24 (+6d) |  |  |
| CON-LEG101-LR-6660 | Pavement Markings (White Paint/Yellow Paint) [Local – 07 ] |  | 2027-11-14 → 2027-11-20 (+6d) | 50% → 70% | -81.1d → -85.6d |
| CON-LEG101-LR-6760 | Handicap ramp [Local – 07 ] | 2027-11-14 → 2027-11-20 (+6d) | 2027-11-18 → 2027-11-24 (+6d) |  | -81.1d → -85.6d |
| 6 | **Traffic Signs** |  | 2027-11-27 → 2027-12-02 (+5d) |  |  |
| CON-LEG101-LR-6860 | Installation of Traffic Signs [Local – 07 ] |  | 2027-11-27 → 2027-12-02 (+5d) | 75% → 80% | -81.1d → -85.6d |

| ID | Task | Start | Finish | Complete | Total float |
| --- | --- | --- | --- | --- | --- |
| CON-LEG101-LR-6560 | Retroreflective Plastic Cones [Local – 07 ] | 2027-11-18 → 2027-11-24 (+6d) | 2027-11-23 → 2027-11-29 (+6d) |  | -81.1d → -85.6d |
| 8 | **Local – 08** |  | 2027-11-27 → 2027-12-01 (+4d) |  |  |
| 4 | **Interlocking block sidewalk/footpath** |  | 2027-11-14 → 2027-11-20 (+6d) |  |  |
| CON-LEG101-LR-6370 | Interlocking block pavers for sidewalk/footpath [Local – 08 ] |  | 2027-11-14 → 2027-11-20 (+6d) | 85% → 90% | -69.55d → -74.5d |
| 5 | **Pavement Markings** | 2027-11-10 → 2026-11-18 (-357d) | 2027-11-18 → 2027-11-23 (+5d) |  |  |
| CON-LEG101-LR-6670 | Pavement Markings (White Paint/Yellow Paint) [Local – 08 ] | 2027-11-10 → 2026-11-18 A (-357d) | 2027-11-14 → 2027-11-18 (+4d) | 0% → 50% | -81.2d → -85.2d |
| CON-LEG101-LR-6770 | Handicap ramp [Local – 08 ] | 2027-11-15 → 2027-11-20 (+5d) | 2027-11-18 → 2027-11-23 (+5d) |  | -81.2d → -85.2d |
| 6 | **Traffic Signs** |  | 2027-11-27 → 2027-12-01 (+4d) |  |  |
| CON-LEG101-LR-6870 | Installation of Traffic Signs [Local – 08 ] |  | 2027-11-27 → 2027-12-01 (+4d) |  | -81.2d → -85.2d |
| CON-LEG101-LR-6570 | Retroreflective Plastic Cones [Local – 08 ] | 2027-11-20 → 2027-11-24 (+4d) | 2027-11-23 → 2027-11-28 (+5d) |  | -81.2d → -85.2d |
| 5 | **Fence and Gate** |  | 2027-12-12 → 2027-12-11 (-1d) |  |  |
| 1 | **Fence and Gate Segment -01 (From 0+000 to 0+671)** |  | 2027-03-20 → 2027-03-27 (+7d) |  |  |
| 1 | **Fence** |  | 2027-03-20 → 2027-03-27 (+7d) |  |  |
| CON-LEG101-FG-1000 | Excavation for Fences [Fence and Gate Segment -01] |  | 2026-11-22 → 2026-11-29 (+7d) |  | 3.42d → 5.42d |
| CON-LEG101-FG-1100 | Lean concrete for Foundation [Fence and Gate Segment -01] |  | 2026-11-26 → 2026-12-03 (+7d) |  | 3.42d → 5.42d |
| CON-LEG101-FG-1150 | Reinforced concrete Structure [Fence and Gate Segment -01] |  | 2026-12-17 → 2026-12-24 (+7d) |  | 3.42d → 5.42d |
| CON-LEG101-FG-1200 | Spraying of bituminous paint waterproofing for R.C foundation [Fence and Gate Segment -01] | 2026-12-17 → 2026-12-24 (+7d) | 2026-12-29 → 2027-01-05 (+7d) |  | 3.42d → 5.42d |
| CON-LEG101-FG-1260 | Embankments to the Fences [Fence and Gate Segment -01] | 2026-12-29 → 2027-01-05 (+7d) | 2027-01-07 → 2027-01-14 (+7d) |  | 3.42d → 5.42d |
| CON-LEG101-FG-1050 | Concrete Works for Ground Beam for Fences [Fence and Gate Segment -01] | 2027-01-07 → 2027-01-14 (+7d) | 2027-01-31 → 2027-02-07 (+7d) |  | 3.42d → 5.42d |
| CON-LEG101-FG-1420 | Plster Works for Fences [Fence and Gate Segment -01] | 2027-01-31 → 2027-02-07 (+7d) | 2027-02-18 → 2027-02-27 (+9d) |  | 3.42d → 5.42d |
| CON-LEG101-FG-1280 | Installation of Metal Fence [Fence and Gate Segment -01] | 2027-02-18 → 2027-02-27 (+9d) | 2027-03-08 → 2027-03-15 (+7d) |  | 3.42d → 5.42d |
| CON-LEG101-FG-1340 | Paint On Cement Plaster [Fence and Gate Segment -01] | 2027-03-08 → 2027-03-15 (+7d) | 2027-03-20 → 2027-03-27 (+7d) |  | 3.42d → 5.42d |
| 2 | **Fence and Gate Segment -02 (From 0+671 to 1+342)** |  | 2027-05-19 → 2027-05-12 (-7d) |  |  |
| 1 | **Fence** |  | 2027-05-19 → 2027-05-12 (-7d) |  |  |
| CON-LEG101-FG-1010 | Excavation for Fences [Fence and Gate Segment -02] |  | 2027-03-23 → 2027-03-30 (+7d) |  | 3.42d → 5.42d |
| CON-LEG101-FG-1110 | Lean concrete for Foundation [Fence and Gate Segment -02] |  | 2027-03-24 → 2027-03-31 (+7d) |  | 3.42d → 5.42d |
| CON-LEG101-FG-1160 | Reinforced concrete Structure [Fence and Gate Segment -02] |  | 2027-03-30 → 2027-04-06 (+7d) |  | 3.42d → 5.42d |
| CON-LEG101-FG-1210 | Spraying of bituminous paint waterproofing for R.C foundation [Fence and Gate Segment -02] |  | 2027-04-01 → 2027-04-08 (+7d) |  | 3.42d → 5.42d |
| CON-LEG101-FG-1330 | Embankments to the Fences [Fence and Gate Segment -02] |  | 2027-04-04 → 2027-04-11 (+7d) |  | 3.42d → 5.42d |
| CON-LEG101-FG-1060 | Concrete Works for Ground Beam for Fences [Fence and Gate Segment -02] |  | 2027-04-10 → 2027-04-17 (+7d) |  | 3.42d → 5.42d |
| CON-LEG101-FG-1290 | Installation of Metal Fence [Fence and Gate Segment -02] |  |  | 40% → 80% | 3.42d → 5.42d |
| CON-LEG101-FG-1350 | Paint On Cement Plaster [Fence and Gate Segment -02] |  | 2027-05-19 → 2027-05-12 (-7d) | 20% → 40% | 3.42d → 5.42d |
| CON-LEG101-FG-1430 | Plster Works for Fences [Fence and Gate Segment -02] | 2027-04-10 → 2027-04-17 (+7d) | 2027-04-24 → 2027-05-01 (+7d) |  | 3.42d → 5.42d |
| 3 | **Fence and Gate Segment -03 (From 1+342 to 2+014)** |  | 2027-07-13 → 2027-07-11 (-2d) |  |  |
| 1 | **Fence** |  | 2027-06-03 → 2027-06-01 (-2d) |  |  |
| CON-LEG101-FG-1300 | Installation of Metal Fence [Fence and Gate Segment -03] |  | 2027-05-27 → 2027-05-25 (-2d) |  | 3.42d → 5.42d |
| CON-LEG101-FG-1440 | Plster Works for Fences [Fence and Gate Segment -03] |  | 2027-05-26 → 2027-05-24 (-2d) |  | 3.42d → 5.42d |
| CON-LEG101-FG-1360 | Paint On Cement Plaster [Fence and Gate Segment -03] |  | 2027-06-03 → 2027-06-01 (-2d) |  | 37.42d → 39.42d |
| 2 | **Gate** | 2027-05-27 → 2027-05-25 (-2d) | 2027-07-13 → 2027-07-11 (-2d) |  |  |
| CON-LEG101-FG-1250 | Installation of Main Entrance Motorized Gate [Fence and Gate Segment -03] | 2027-05-27 → 2027-05-25 (-2d) | 2027-06-20 → 2027-06-17 (-3d) |  | 3.42d → 5.42d |
| CON-LEG101-FG-1270 | Installation of Pedestrain Gate [Fence and Gate Segment -03] | 2027-06-20 → 2027-06-17 (-3d) | 2027-07-13 → 2027-07-11 (-2d) |  | 3.42d → 5.42d |
| 4 | **Fence and Gate Segment -04 (From 2+014 to 2+685)** |  | 2027-09-06 → 2027-09-05 (-1d) |  |  |
| 1 | **Fence** |  | 2027-09-06 → 2027-09-05 (-1d) |  |  |
| CON-LEG101-FG-1370 | Paint On Cement Plaster [Fence and Gate Segment -04] |  | 2027-09-06 → 2027-09-05 (-1d) |  | -43d → -42d |
| CON-LEG101-FG-1450 | Plster Works for Fences [Fence and Gate Segment -04] |  | 2027-07-18 → 2027-07-25 (+7d) |  | -0.82d → -6.82d |
| 5 | **Fence and Gate Segment -05 (From 2+685 to 3+356)** | 2027-09-06 → 2027-09-05 (-1d) | 2027-12-12 → 2027-12-11 (-1d) |  |  |
| 1 | **Fence** | 2027-09-06 → 2027-09-05 (-1d) | 2027-12-12 → 2027-12-11 (-1d) |  |  |
| CON-LEG101-FG-1040 | Excavation for Fences [Fence and Gate Segment -05] | 2027-09-06 → 2027-09-05 (-1d) | 2027-09-18 → 2027-09-16 (-2d) |  | -43d → -42d |
| CON-LEG101-FG-1140 | Lean concrete for Foundation [Fence and Gate Segment -05] | 2027-09-18 → 2027-09-16 (-2d) | 2027-09-22 → 2027-09-21 (-1d) |  | -43d → -42d |
| CON-LEG101-FG-1190 | Reinforced concrete Structure [Fence and Gate Segment -05] | 2027-09-22 → 2027-09-21 (-1d) | 2027-10-17 → 2027-10-16 (-1d) |  | -43d → -42d |
| CON-LEG101-FG-1240 | Spraying of bituminous paint waterproofing for R.C foundation [Fence and Gate Segment -05] | 2027-10-17 → 2027-10-16 (-1d) | 2027-10-28 → 2027-10-27 (-1d) |  | -43d → -42d |
| CON-LEG101-FG-1410 | Embankments to the Fences [Fence and Gate Segment -05] | 2027-10-28 → 2027-10-27 (-1d) | 2027-11-02 → 2027-11-01 (-1d) |  | -43d → -42d |
| CON-LEG101-FG-1090 | Concrete Works for Ground Beam for Fences [Fence and Gate Segment -05] | 2027-11-02 → 2027-11-01 (-1d) | 2027-11-20 → 2027-11-18 (-2d) |  | -43d → -42d |
| CON-LEG101-FG-1460 | Plster Works for Fences [Fence and Gate Segment -05] | 2027-11-20 → 2027-11-18 (-2d) | 2027-11-27 → 2027-11-25 (-2d) |  | -43d → -42d |
| CON-LEG101-FG-1320 | Installation of Metal Fence [Fence and Gate Segment -05] | 2027-11-27 → 2027-11-25 (-2d) | 2027-12-05 → 2027-12-04 (-1d) |  | -43d → -42d |
| CON-LEG101-FG-1380 | Paint On Cement Plaster [Fence and Gate Segment -05] | 2027-12-05 → 2027-12-04 (-1d) | 2027-12-12 → 2027-12-11 (-1d) |  | -43d → -42d |
| 2 | **Roundabout & Landscape** |  | 2028-03-06 → 2028-02-26 (-9d) |  |  |
| 10 | **Local – 01** |  | 2027-11-20 → 2027-11-23 (+3d) |  |  |
| 1 | **LOCAL - 01 Segment-01 (From 0+000 to 1+066)** |  | 2027-11-04 → 2027-11-08 (+4d) |  |  |
| 3 | **Irrigation Works** |  | 2027-09-22 → 2027-09-27 (+5d) |  |  |
| 1 | **Secondary Irrigation** |  | 2027-09-22 → 2027-09-27 (+5d) |  |  |
| 1 | **Pipe Work** |  | 2027-08-30 → 2027-09-05 (+6d) |  |  |
| CON-LEG101-LR-5410 | Installation of tubing for risers connections from laterals [Local – 01 Segment-01] |  | 2027-08-30 → 2027-09-05 (+6d) |  | -27.15d → -30.05d |
| 2 | **Valves and Controller** |  | 2027-09-22 → 2027-09-27 (+5d) |  |  |
| CON-LEG101-LR-5270 | Installation of Electrical Solenoid Valve [Local – 01 Segment-01] |  | 2027-09-01 → 2026-11-18 A (-287d) | 50% → 100% | -27.15d → none |
| CON-LEG101-LR-5310 | Installation of quick coupler valve [Local – 01 Segment-01] |  | 2027-09-05 → 2027-09-08 (+3d) |  | -27.15d → -30.05d |
| CON-LEG101-LR-5350 | Installation of a Flush valve [Local – 01 Segment-01] |  | 2027-09-07 → 2027-09-11 (+4d) |  | -27.15d → -30.05d |
| CON-LEG101-LR-5470 | Installation of Advanced Irrigation controller [Local – 01 Segment-01] |  | 2027-09-12 → 2027-09-15 (+3d) |  | -27.15d → -30.05d |
| CON-LEG101-LR-5480 | Install single station decoder for valve connection [Local – 01 Segment-01] |  | 2027-09-15 → 2027-09-19 (+4d) |  | -27.15d → -30.05d |
| CON-LEG101-LR-5520 | Installation of Decoder cables 12 AWG between valves and controllers [Local – 01 Segment-01] |  | 2027-09-22 → 2027-09-27 (+5d) |  | -27.15d → -30.05d |

| ID | Task | Start | Finish | Complete | Total float |
| --- | --- | --- | --- | --- | --- |
| 14 | **Curbs and edging** | 2027-09-22 → 2027-09-27 (+5d) | 2027-09-26 → 2027-09-29 (+3d) |  |  |
| CON-LEG101-LR-4790 | Installation of Curbs and edging [Local – 01 Segment-01] | 2027-09-22 → 2027-09-27 (+5d) | 2027-09-26 → 2027-09-29 (+3d) |  | -27.15d → -30.05d |
| 13 | **Landscape** |  | 2027-11-04 → 2027-11-08 (+4d) |  |  |
| CON-LEG101-LR-4580 | Site preparation for Planting Area [Local – 01 Segment-01] |  | 2027-10-02 → 2027-10-05 (+3d) |  | -27.15d → -30.05d |
| CON-LEG101-LR-4650 | Placing Agricutural Soil [Local – 01 Segment-01] | 2027-10-02 → 2027-10-05 (+3d) | 2027-10-12 → 2027-10-16 (+4d) |  | -27.15d → -30.05d |
| CON-LEG101-LR-4720 | Planting Shrubs And Ground Cover [Local – 01 Segment-01] | 2027-10-12 → 2027-10-16 (+4d) | 2027-11-04 → 2027-11-08 (+4d) |  | -14.15d → -17.05d |
| 2 | **LOCAL - 01 Segment-02 (From 1+066 to 2+133)** |  | 2027-11-20 → 2027-11-23 (+3d) |  |  |
| 2 | **Irrigation Works** |  | 2027-10-21 → 2027-10-25 (+4d) |  |  |
| 1 | **Secondary Irrigation** |  | 2027-10-21 → 2027-10-25 (+4d) |  |  |
| 2 | **Valves and Controller** |  | 2027-10-21 → 2027-10-25 (+4d) |  |  |
| CON-LEG101-LR-5360 | Installation of a Flush valve [Local – 01 Segment-02] |  | 2027-10-14 → 2027-10-18 (+4d) |  | -27.15d → -30.05d |
| CON-LEG101-LR-5530 | Installation of Decoder cables 12 AWG between valves and controllers [Local – 01 Segment-02] |  | 2027-10-21 → 2027-10-25 (+4d) |  | -27.15d → -30.05d |
| 14 | **Curbs and edging** | 2027-10-21 → 2027-10-25 (+4d) | 2027-10-24 → 2027-10-27 (+3d) |  |  |
| CON-LEG101-LR-4800 | Installation of Curbs and edging [Local – 01 Segment-02] | 2027-10-21 → 2027-10-25 (+4d) | 2027-10-24 → 2027-10-27 (+3d) |  | -27.15d → -30.05d |
| 13 | **Landscape** |  | 2027-11-20 → 2027-11-23 (+3d) |  |  |
| CON-LEG101-LR-4590 | Site preparation for Planting Area [Local – 01 Segment-02] |  | 2027-10-30 → 2027-11-02 (+3d) |  | -27.15d → -30.05d |
| CON-LEG101-LR-4660 | Placing Agricutural Soil [Local – 01 Segment-02] | 2027-10-30 → 2027-11-02 (+3d) | 2027-11-09 → 2027-11-13 (+4d) |  | -27.15d → -30.05d |
| CON-LEG101-LR-4730 | Planting Shrubs And Ground Cover [Local – 01 Segment-02] | 2027-11-09 → 2027-11-13 (+4d) | 2027-11-20 → 2027-11-23 (+3d) |  | -27.15d → -30.05d |
| 3 | **LOCAL - 01 Segment-03 (From 2+133 to 3+200)** |  | 2027-10-28 → 2027-10-26 (-2d) |  |  |
| CON-LEG101-LR-5100 | Sand Surround for Secondary Irrigation [Local – 01 Segment-03] |  | 2027-09-21 → 2027-09-20 (-1d) |  | 11.2d → 11.65d |
| CON-LEG101-LR-5230 | Backfilling to Subgrade Elevation [Local – 01 Segment-03] |  | 2027-09-26 → 2027-09-25 (-1d) |  | 11.2d → 11.65d |
| 14 | **Curbs and edging** | 2027-09-30 → 2027-09-29 (-1d) |  |  |  |
| CON-LEG101-LR-4810 | Installation of Curbs and edging [Local – 01 Segment-03] | 2027-09-30 → 2027-09-29 (-1d) |  |  | -8.5d → -6.25d |
| 13 | **Landscape** |  | 2027-10-28 → 2027-10-26 (-2d) |  |  |
| CON-LEG101-LR-4600 | Site preparation for Planting Area [Local – 01 Segment-03] |  | 2027-10-07 → 2027-10-05 (-2d) | 50% → 70% | -8.5d → -6.25d |
| CON-LEG101-LR-4670 | Placing Agricutural Soil [Local – 01 Segment-03] | 2027-10-07 → 2027-10-05 (-2d) | 2027-10-18 → 2027-10-16 (-2d) |  | -8.5d → -6.25d |
| CON-LEG101-LR-4740 | Planting Shrubs And Ground Cover [Local – 01 Segment-03] | 2027-10-18 → 2027-10-16 (-2d) | 2027-10-28 → 2027-10-26 (-2d) |  | -8.5d → -6.25d |
| 3 | **Local – 02** |  | 2027-10-28 → 2027-10-24 (-4d) |  |  |
| 3 | **Irrigation Works** |  | 2027-10-07 → 2027-10-04 (-3d) |  |  |
| 1 | **Secondary Irrigation** |  | 2027-10-07 → 2027-10-04 (-3d) |  |  |
| CON-LEG101-LR-4900 | Excavation for Secondary Irrigation [Local – 02 ] |  | 2027-09-18 → 2027-09-16 (-2d) |  | -28.5d → -28.05d |
| CON-LEG101-LR-5040 | Installation of Pipe for Secondary Irrigation [Local – 02 ] |  | 2027-09-19 → 2027-09-18 (-1d) |  | -8.3d → -4.15d |
| CON-LEG101-LR-5240 | Backfilling to Subgrade Elevation [Local – 02 ] |  | 2027-09-25 → 2027-09-22 (-3d) |  | 13.3d → 13.75d |
| 2 | **Valves and Controller** |  | 2027-10-07 → 2027-10-04 (-3d) |  |  |
| CON-LEG101-LR-5280 | Installation of Electrical Solenoid Valve [Local – 02 ] |  | 2027-09-21 → 2026-11-19 A (-306d) | 50% → 100% | -8.3d → none |
| CON-LEG101-LR-5320 | Installation of quick coupler valve [Local – 02 ] |  | 2027-09-26 → 2027-09-21 (-5d) |  | -8.3d → -4.15d |
| CON-LEG101-LR-5380 | Installation of a Flush valve [Local – 02 ] |  | 2027-09-28 → 2027-09-25 (-3d) |  | -8.3d → -4.15d |
| CON-LEG101-LR-5490 | Install single station decoder for valve connection [Local – 02 ] |  | 2027-10-02 → 2027-09-28 (-4d) |  | -8.3d → -4.15d |
| CON-LEG101-LR-5550 | Installation of Decoder cables 12 AWG between valves and controllers [Local – 02 ] |  | 2027-10-07 → 2027-10-04 (-3d) |  | -8.3d → -4.15d |
| 14 | **Curbs and edging** | 2027-10-07 → 2027-10-04 (-3d) | 2027-10-11 → 2027-10-07 (-4d) |  |  |
| CON-LEG101-LR-4830 | Installation of Curbs and edging [Local – 02 ] | 2027-10-07 → 2027-10-04 (-3d) | 2027-10-11 → 2027-10-07 (-4d) |  | -8.3d → -4.15d |
| 13 | **Landscape** |  | 2027-10-28 → 2027-10-24 (-4d) |  |  |
| CON-LEG101-LR-4610 | Site preparation for Planting Area [Local – 02 ] |  | 2027-10-14 → 2027-10-10 (-4d) | 50% → 70% | -8.3d → -4.15d |
| CON-LEG101-LR-4680 | Placing Agricutural Soil [Local – 02 ] | 2027-10-14 → 2027-10-10 (-4d) | 2027-10-21 → 2027-10-17 (-4d) |  | -8.3d → -4.15d |
| CON-LEG101-LR-4750 | Planting Shrubs And Ground Cover [Local – 02 ] | 2027-10-21 → 2027-10-17 (-4d) | 2027-10-28 → 2027-10-24 (-4d) |  | -8.3d → -4.15d |
| 5 | **Local – 04** | 2027-11-10 → 2027-11-17 (+7d) | 2028-01-12 → 2028-01-19 (+7d) |  |  |
| 2 | **Irrigation Works** | 2027-11-10 → 2027-11-17 (+7d) | 2027-12-29 → 2028-01-05 (+7d) |  |  |
| 1 | **Secondary Irrigation** | 2027-11-10 → 2027-11-17 (+7d) | 2027-12-29 → 2028-01-05 (+7d) |  |  |
| 1 | **Pipe Work** | 2027-11-10 → 2027-11-17 (+7d) | 2027-12-13 → 2027-12-20 (+7d) |  |  |
| CON-LEG101-LR-4910 | Excavation for Secondary Irrigation [Local – 04 ] | 2027-11-10 → 2027-11-17 (+7d) | 2027-11-13 → 2027-11-20 (+7d) |  | -74d → -80d |
| CON-LEG101-LR-4980 | Sand bedding for Secondary Irrigation [Local – 04 ] | 2027-11-14 → 2027-11-21 (+7d) | 2027-11-20 → 2027-11-27 (+7d) |  | -74d → -80d |
| CON-LEG101-LR-5050 | Installation of Pipe for Secondary Irrigation [Local – 04 ] | 2027-11-21 → 2027-11-28 (+7d) | 2027-11-29 → 2027-12-06 (+7d) |  | -74d → -80d |
| CON-LEG101-LR-5120 | Sand Surround for Secondary Irrigation [Local – 04 ] | 2027-11-30 → 2027-12-07 (+7d) | 2027-12-02 → 2027-12-09 (+7d) |  | -74d → -80d |
| CON-LEG101-LR-5190 | Installation of Micron Marker Magnetic Tape [Local – 04 ] | 2027-12-04 → 2027-12-11 (+7d) | 2027-12-08 → 2027-12-15 (+7d) |  | -74d → -80d |
| CON-LEG101-LR-5250 | Backfilling to Subgrade Elevation [Local – 04 ] | 2027-12-09 → 2027-12-16 (+7d) | 2027-12-11 → 2027-12-18 (+7d) |  | -74d → -80d |
| CON-LEG101-LR-5450 | Installation of tubing for risers connections from laterals [Local – 04 ] | 2027-12-12 → 2027-12-19 (+7d) | 2027-12-13 → 2027-12-20 (+7d) |  | -74d → -80d |
| 2 | **Valves and Controller** | 2027-11-30 → 2027-12-07 (+7d) | 2027-12-29 → 2028-01-05 (+7d) |  |  |
| CON-LEG101-LR-5290 | Installation of Electrical Solenoid Valve [Local – 04 ] | 2027-11-30 → 2027-12-07 (+7d) | 2027-12-06 → 2027-12-13 (+7d) |  | -74d → -80d |
| CON-LEG101-LR-5330 | Installation of quick coupler valve [Local – 04 ] | 2027-12-07 → 2027-12-14 (+7d) | 2027-12-13 → 2027-12-20 (+7d) |  | -74d → -80d |
| CON-LEG101-LR-5390 | Installation of a Flush valve [Local – 04 ] | 2027-12-14 → 2027-12-21 (+7d) | 2027-12-19 → 2027-12-26 (+7d) |  | -74d → -80d |
| CON-LEG101-LR-5500 | Install single station decoder for valve connection [Local – 04 ] | 2027-12-20 → 2027-12-27 (+7d) | 2027-12-27 → 2028-01-03 (+7d) |  | -74d → -80d |
| CON-LEG101-LR-5560 | Installation of Decoder cables 12 AWG between valves and controllers [Local – 04 ] | 2027-12-28 → 2028-01-04 (+7d) | 2027-12-29 → 2028-01-05 (+7d) |  | -74d → -80d |
| 14 | **Curbs and edging** | 2027-12-30 → 2028-01-06 (+7d) | 2028-01-02 → 2028-01-09 (+7d) |  |  |
| CON-LEG101-LR-4840 | Installation of Curbs and edging [Local – 04 ] | 2027-12-30 → 2028-01-06 (+7d) | 2028-01-02 → 2028-01-09 (+7d) |  | -74d → -80d |
| 13 | **Landscape** | 2028-01-03 → 2028-01-10 (+7d) | 2028-01-12 → 2028-01-19 (+7d) |  |  |
| CON-LEG101-LR-4620 | Site preparation for Planting Area [Local – 04 ] | 2028-01-03 → 2028-01-10 (+7d) | 2028-01-05 → 2028-01-12 (+7d) |  | -74d → -80d |
| CON-LEG101-LR-4690 | Placing Agricutural Soil [Local – 04 ] | 2028-01-06 → 2028-01-13 (+7d) | 2028-01-09 → 2028-01-16 (+7d) |  | -74d → -80d |
| CON-LEG101-LR-4760 | Planting Shrubs And Ground Cover [Local – 04 ] | 2028-01-10 → 2028-01-17 (+7d) | 2028-01-12 → 2028-01-19 (+7d) |  | -74d → -80d |
| 6 | **Local – 06** |  | 2027-12-12 → 2027-12-16 (+4d) |  |  |
| 2 | **Irrigation Works** |  | 2027-11-27 → 2027-12-02 (+5d) |  |  |

| ID | Task | Start | Finish | Complete | Total float |
| --- | --- | --- | --- | --- | --- |
| 1 | **Secondary Irrigation** |  | 2027-11-27 → 2027-12-02 (+5d) |  |  |
| 1 | **Pipe Work** |  | 2027-11-13 → 2027-11-20 (+7d) |  |  |
| CON-LEG101-LR-4920 | Excavation for Secondary Irrigation [Local – 06 ] |  | 2027-11-10 → 2027-11-17 (+7d) |  | -46.55d → -50.95d |
| CON-LEG101-LR-5060 | Installation of Pipe for Secondary Irrigation [Local – 06 ] |  | 2027-11-10 → 2027-11-17 (+7d) |  | -46.55d → -50.95d |
| CON-LEG101-LR-5260 | Backfilling to Subgrade Elevation [Local – 06 ] |  | 2027-11-11 → 2027-11-18 (+7d) |  | -46.55d → -50.95d |
| CON-LEG101-LR-5460 | Installation of tubing for risers connections from laterals [Local – 06 ] |  | 2027-11-13 → 2027-11-20 (+7d) |  | -46.55d → -50.95d |
| 2 | **Valves and Controller** |  | 2027-11-27 → 2027-12-02 (+5d) |  |  |
| CON-LEG101-LR-5300 | Installation of Electrical Solenoid Valve [Local – 06 ] |  | 2027-11-15 → 2027-11-21 (+6d) | 50% → 70% | -46.55d → -50.95d |
| CON-LEG101-LR-5340 | Installation of quick coupler valve [Local – 06 ] |  | 2027-11-17 → 2027-11-23 (+6d) |  | -46.55d → -50.95d |
| CON-LEG101-LR-5400 | Installation of a Flush valve [Local – 06 ] |  | 2027-11-21 → 2027-11-27 (+6d) |  | -46.55d → -50.95d |
| CON-LEG101-LR-5510 | Install single station decoder for valve connection [Local – 06 ] |  | 2027-11-23 → 2027-11-29 (+6d) |  | -46.55d → -50.95d |
| CON-LEG101-LR-5570 | Installation of Decoder cables 12 AWG between valves and controllers [Local – 06 ] |  | 2027-11-27 → 2027-12-02 (+5d) |  | -46.55d → -50.95d |
| 14 | **Curbs and edging** | 2027-11-27 → 2027-12-02 (+5d) | 2027-11-30 → 2027-12-06 (+6d) |  |  |
| CON-LEG101-LR-4850 | Installation of Curbs and edging [Local – 06 ] | 2027-11-27 → 2027-12-02 (+5d) | 2027-11-30 → 2027-12-06 (+6d) |  | -46.55d → -50.95d |
| 13 | **Landscape** |  | 2027-12-12 → 2027-12-16 (+4d) |  |  |
| CON-LEG101-LR-4630 | Site preparation for Planting Area [Local – 06 ] |  | 2027-12-02 → 2027-12-07 (+5d) | 50% → 70% | -46.55d → -50.95d |
| CON-LEG101-LR-4700 | Placing Agricutural Soil [Local – 06 ] | 2027-12-02 → 2027-12-07 (+5d) | 2027-12-07 → 2027-12-12 (+5d) |  | -46.55d → -50.95d |
| CON-LEG101-LR-4770 | Planting Shrubs And Ground Cover [Local – 06 ] | 2027-12-07 → 2027-12-12 (+5d) | 2027-12-12 → 2027-12-16 (+4d) |  | -46.55d → -50.95d |
| 1 | **Roundabout - 01 (L01 & L04)** |  | 2028-03-06 → 2028-02-26 (-9d) |  |  |
| 1 | **Irrigation Works** |  | 2028-01-04 → 2027-12-12 (-23d) |  |  |
| 1 | **Secondary Irrigation** |  | 2028-01-04 → 2027-12-12 (-23d) |  |  |
| 1 | **Pipe Work** |  | 2028-01-04 → 2027-11-29 (-36d) |  |  |
| CON-LEG101-RA-1120 | Excavation for Secondary Irrigation [Roundabout : 01 ] |  | 2027-11-16 → 2026-11-21 A (-360d) | 50% → 100% | -119.5d → none |
| CON-LEG101-RA-1150 | Sand bedding for Secondary Irrigation [Roundabout : 01 ] |  | 2027-11-22 → 2026-11-21 A (-366d) | 50% → 100% | -119.5d → none |
| CON-LEG101-RA-1180 | Installation of Pipe for Secondary Irrigation [Roundabout : 01 ] |  | 2027-11-29 → 2026-11-21 A (-373d) | 50% → 100% | -119.5d → none |
| CON-LEG101-RA-1210 | Sand Surround for Secondary Irrigation [Roundabout : 01 ] |  | 2027-12-07 → 2026-11-21 A (-381d) | 50% → 100% | -114.5d → none |
| CON-LEG101-RA-1240 | Installation of Micron Marker Magnetic Tape [Roundabout : 01 ] |  | 2027-12-15 → 2026-11-21 A (-389d) | 50% → 100% | -114.5d → none |
| CON-LEG101-RA-1270 | Backfilling to Subgrade Elevation [Roundabout : 01 ] |  | 2027-12-23 → 2026-11-21 A (-397d) | 50% → 100% | -114.5d → none |
| CON-LEG101-RA-1390 | Installation of tubing for risers connections from laterals [Roundabout : 01 ] |  | 2028-01-04 → 2027-11-29 (-36d) |  | -114.5d → -79.2d |
| 2 | **Valves and Controller** |  | 2027-12-27 → 2027-12-12 (-15d) |  |  |
| A | Catch |  | 2027-12-27 → 2027-12-12 (-15d) |  | -119.5d → -102.7d |
| CON-LEG101-RA-1300 | Installation of Electrical Solenoid Valve [Roundabout : 01 ] |  | 2027-12-01 → 2026-11-22 A (-374d) | 50% → 100% | -119.5d → none |
| CON-LEG101-RA-1330 | Installation of quick coupler valve [Roundabout : 01 ] |  | 2027-12-05 → 2027-11-20 (-15d) |  | -119.5d → -102.7d |
| CON-LEG101-RA-1360 | Installation of a Flush valve [Roundabout : 01 ] |  | 2027-12-11 → 2027-11-25 (-16d) |  | -119.5d → -102.7d |
| CON-LEG101-RA-1420 | Install single station decoder for valve connection [Roundabout : 01 ] |  | 2027-12-19 → 2027-12-04 (-15d) |  | -119.5d → -102.7d |
| 3 | **Curbs and edging** | 2027-12-28 → 2027-12-13 (-15d) | 2028-01-10 → 2027-12-26 (-15d) |  |  |
| CON-LEG101-RA-1090 | Installation of Curbs and edging [Roundabout : 01 ] | 2027-12-28 → 2027-12-13 (-15d) | 2028-01-10 → 2027-12-26 (-15d) |  | -119.5d → -102.7d |
| 2 | **Landscape** |  | 2028-03-06 → 2028-02-26 (-9d) |  |  |
| CON-LEG101-RA-1000 | Site preparation for Planting Area [Roundabout : 01 ] |  | 2028-01-22 → 2028-01-02 (-20d) | 50% → 70% | -119.5d → -102.7d |
| CON-LEG101-RA-1030 | Placing Agricutural Soil [Roundabout : 01 ] | 2028-01-22 → 2028-01-13 (-9d) | 2028-02-13 → 2028-02-03 (-10d) |  | -119.5d → -112d |
| CON-LEG101-RA-1060 | Planting Shrubs And Ground Cover [Roundabout : 01 ] | 2028-02-13 → 2028-02-05 (-8d) | 2028-03-06 → 2028-02-26 (-9d) |  | -119.5d → -112d |
| 4 | **Roundabout - 02 (L01 & L03)** |  | 2028-02-14 → 2028-01-27 (-18d) |  |  |
| 1 | **Irrigation Works** |  | 2028-01-12 → 2027-12-27 (-16d) |  |  |
| 1 | **Secondary Irrigation** |  | 2028-01-12 → 2027-12-27 (-16d) |  |  |
| 1 | **Pipe Work** |  | 2028-01-03 → 2027-12-19 (-15d) |  |  |
| CON-LEG101-RA-1130 | Excavation for Secondary Irrigation [Roundabout : 02 ] |  | 2027-12-14 → 2027-11-29 (-15d) |  | -101.6d → -86.6d |
| CON-LEG101-RA-1160 | Sand bedding for Secondary Irrigation [Roundabout : 02 ] |  | 2027-12-16 → 2027-12-01 (-15d) |  | -101.6d → -86.6d |
| CON-LEG101-RA-1190 | Installation of Pipe for Secondary Irrigation [Roundabout : 02 ] |  | 2027-12-19 → 2027-12-04 (-15d) |  | -101.6d → -86.6d |
| CON-LEG101-RA-1220 | Sand Surround for Secondary Irrigation [Roundabout : 02 ] |  | 2027-12-22 → 2027-12-07 (-15d) |  | -65.2d → -52.2d |
| CON-LEG101-RA-1250 | Installation of Micron Marker Magnetic Tape [Roundabout : 02 ] |  | 2027-12-26 → 2027-12-11 (-15d) |  | -65.2d → -52.2d |
| CON-LEG101-RA-1280 | Backfilling to Subgrade Elevation [Roundabout : 02 ] |  | 2027-12-28 → 2027-12-13 (-15d) |  | -65.2d → -52.2d |
| CON-LEG101-RA-1400 | Installation of tubing for risers connections from laterals [Roundabout : 02 ] |  | 2028-01-03 → 2027-12-19 (-15d) |  | -65.2d → -52.2d |
| 2 | **Valves and Controller** |  | 2028-01-12 → 2027-12-27 (-16d) |  |  |
| CON-LEG101-RA-1310 | Installation of Electrical Solenoid Valve [Roundabout : 02 ] |  | 2027-12-22 → 2027-12-06 (-16d) | 50% → 70% | -101.6d → -86.6d |
| CON-LEG101-RA-1340 | Installation of quick coupler valve [Roundabout : 02 ] |  | 2027-12-25 → 2027-12-08 (-17d) |  | -101.6d → -86.6d |
| CON-LEG101-RA-1370 | Installation of a Flush valve [Roundabout : 02 ] |  | 2028-01-01 → 2027-12-15 (-17d) |  | -101.6d → -86.6d |
| CON-LEG101-RA-1430 | Install single station decoder for valve connection [Roundabout : 02 ] |  | 2028-01-04 → 2027-12-19 (-16d) |  | -101.6d → -86.6d |
| CON-LEG101-RA-1460 | Installation of Decoder cables 12 AWG between valves and controllers [Roundabout : 02 ] |  | 2028-01-12 → 2027-12-27 (-16d) |  | -101.6d → -86.6d |
| 3 | **Curbs and edging** | 2028-01-12 → 2027-12-27 (-16d) | 2028-01-16 → 2027-12-30 (-17d) |  |  |
| CON-LEG101-RA-1100 | Installation of Curbs and edging [Roundabout : 02 ] | 2028-01-12 → 2027-12-27 (-16d) | 2028-01-16 → 2027-12-30 (-17d) |  | -101.6d → -86.6d |
| 2 | **Landscape** |  | 2028-02-14 → 2028-01-27 (-18d) |  |  |
| CON-LEG101-RA-1010 | Site preparation for Planting Area [Roundabout : 02 ] |  | 2028-01-22 → 2028-01-04 (-18d) | 50% → 60% | -101.6d → -86.6d |
| CON-LEG101-RA-1040 | Placing Agricutural Soil [Roundabout : 02 ] | 2028-01-22 → 2028-01-04 (-18d) | 2028-02-02 → 2028-01-16 (-17d) |  | -101.6d → -86.6d |
| CON-LEG101-RA-1070 | Planting Shrubs And Ground Cover [Roundabout : 02 ] | 2028-02-02 → 2028-01-16 (-17d) | 2028-02-14 → 2028-01-27 (-18d) |  | -101.6d → -86.6d |
| 2 | **Roundabout - 03 (L03 & L05)** |  | 2028-02-08 → 2028-01-20 (-19d) |  |  |
| 1 | **Irrigation Works** |  | 2028-01-17 → 2027-12-29 (-19d) |  |  |
| 1 | **Secondary Irrigation** |  | 2028-01-17 → 2027-12-29 (-19d) |  |  |
| 1 | **Pipe Work** |  | 2028-01-08 → 2027-12-19 (-20d) |  |  |
| CON-LEG101-RA-1140 | Excavation for Secondary Irrigation [Roundabout : 03 ] |  | 2027-12-16 → 2027-12-01 (-15d) | 75% → 80% | -96.7d → -80.4d |
| CON-LEG101-RA-1170 | Sand bedding for Secondary Irrigation [Roundabout : 03 ] |  | 2027-12-20 → 2027-12-04 (-16d) | 75% → 80% | -96.7d → -80.4d |

| ID | Task | Start | Finish | Complete | Total float |
| --- | --- | --- | --- | --- | --- |
| CON-LEG101-RA-1200 | Installation of Pipe for Secondary Irrigation [Roundabout : 03 ] |  | 2027-12-23 → 2027-12-06 (-17d) | 75% → 80% | -96.7d → -80.4d |
| CON-LEG101-RA-1230 | Sand Surround for Secondary Irrigation [Roundabout : 03 ] |  | 2027-12-26 → 2027-12-08 (-18d) | 75% → 80% | -69.2d → -52.95d |
| CON-LEG101-RA-1260 | Installation of Micron Marker Magnetic Tape [Roundabout : 03 ] |  | 2027-12-29 → 2027-12-11 (-18d) | 75% → 80% | -69.2d → -52.95d |
| CON-LEG101-RA-1290 | Backfilling to Subgrade Elevation [Roundabout : 03 ] |  | 2028-01-02 → 2027-12-14 (-19d) | 75% → 80% | -69.2d → -52.95d |
| CON-LEG101-RA-1410 | Installation of tubing for risers connections from laterals [Roundabout : 03 ] |  | 2028-01-08 → 2027-12-19 (-20d) |  | -69.2d → -52.95d |
| 2 | **Valves and Controller** |  | 2028-01-17 → 2027-12-29 (-19d) |  |  |
| CON-LEG101-RA-1320 | Installation of Electrical Solenoid Valve [Roundabout : 03 ] |  | 2027-12-26 → 2027-12-08 (-18d) | 50% → 70% | -96.7d → -80.4d |
| CON-LEG101-RA-1350 | Installation of quick coupler valve [Roundabout : 03 ] |  | 2027-12-29 → 2027-12-11 (-18d) |  | -96.7d → -80.4d |
| CON-LEG101-RA-1380 | Installation of a Flush valve [Roundabout : 03 ] |  | 2028-01-04 → 2027-12-18 (-17d) |  | -96.7d → -80.4d |
| CON-LEG101-RA-1440 | Install single station decoder for valve connection [Roundabout : 03 ] |  | 2028-01-09 → 2027-12-21 (-19d) |  | -96.7d → -80.4d |
| CON-LEG101-RA-1470 | Installation of Decoder cables 12 AWG between valves and controllers [Roundabout : 03 ] |  | 2028-01-17 → 2027-12-29 (-19d) |  | -96.7d → -80.4d |
| 3 | **Curbs and edging** | 2028-01-17 → 2027-12-29 (-19d) | 2028-01-20 → 2028-01-02 (-18d) |  |  |
| CON-LEG101-RA-1110 | Installation of Curbs and edging [Roundabout : 03 ] | 2028-01-17 → 2027-12-29 (-19d) | 2028-01-20 → 2028-01-02 (-18d) |  | -96.7d → -80.4d |
| 2 | **Landscape** |  | 2028-02-08 → 2028-01-20 (-19d) |  |  |
| CON-LEG101-RA-1020 | Site preparation for Planting Area [Roundabout : 03 ] |  | 2028-01-24 → 2028-01-05 (-19d) | 50% → 60% | -96.7d → -80.4d |
| CON-LEG101-RA-1050 | Placing Agricutural Soil [Roundabout : 03 ] | 2028-01-24 → 2028-01-05 (-19d) | 2028-01-31 → 2028-01-12 (-19d) |  | -96.7d → -80.4d |
| CON-LEG101-RA-1080 | Planting Shrubs And Ground Cover [Roundabout : 03 ] | 2028-01-31 → 2028-01-12 (-19d) | 2028-02-08 → 2028-01-20 (-19d) |  | -96.7d → -80.4d |
| 6 | **Testing & Commissioning** |  | 2028-03-14 → 2028-03-05 (-9d) |  |  |
| CON-LEG101-TC-1020 | Test for Public Water Utility Distribution |  | 2028-01-10 → 2028-01-17 (+7d) |  | -107d → -113d |
| CON-LEG101-TC-1030 | Test for TSE Network |  | 2028-01-24 → 2028-01-31 (+7d) |  | -98.4d → -104.4d |
| CON-LEG101-TC-1040 | Test for Sanitary Sewerage |  | 2028-01-11 → 2028-01-18 (+7d) |  | -103.4d → -109.4d |
| CON-LEG101-TC-1050 | Test for Stormwater Utilities |  | 2028-01-13 → 2028-01-20 (+7d) |  | -103.4d → -109.4d |
| CON-LEG101-TC-1060 | Test for Bridge Work |  | 2028-01-17 → 2028-01-24 (+7d) |  | -98.4d → -104.4d |
| CON-LEG101-TC-1080 | Test for Fence & Gate |  | 2027-12-14 → 2027-12-13 (-1d) |  | -43d → -42d |
| CON-LEG101-TC-1000 | Test for Telecommunications Work |  | 2028-02-02 → 2028-02-09 (+7d) |  | -94.2d → -100.2d |
| CON-LEG101-TC-1010 | Test for Electrical Network |  | 2028-01-22 → 2028-01-29 (+7d) |  | -98.4d → -104.4d |
| CON-LEG101-TC-1070 | Test for CCTV feeding system and GSM |  | 2028-02-06 → 2028-02-13 (+7d) |  | -92d → -98d |
| CON-LEG101-TC-1100 | Test for Road Lighting |  | 2028-01-27 → 2028-02-03 (+7d) |  | -94.2d → -100.2d |
| CON-LEG101-TC-1110 | Test for Road Works |  | 2028-01-09 → 2028-01-16 (+7d) |  | -115.4d → -121.4d |
| CON-LEG101-TC-1120 | Test for Earthing System |  | 2028-02-10 → 2028-02-17 (+7d) |  | -92d → -98d |
| CON-LEG101-TC-1090 | Test for Irrigation and Landscape | 2028-03-06 → 2028-02-27 (-8d) | 2028-03-14 → 2028-03-05 (-9d) |  | -119.5d → -112d |
| 7 | **Project Close-out** | 2027-12-15 → 2027-12-14 (-1d) | 2028-04-06 → 2028-04-09 (+3d) |  |  |
| 1 | **As-Built DWGs** | 2027-12-15 → 2027-12-14 (-1d) | 2028-03-26 → 2028-03-28 (+2d) |  |  |
| 1 | **As-Built DWGs Submittal** | 2027-12-15 → 2027-12-14 (-1d) | 2028-03-20 → 2028-03-11 (-9d) |  |  |
| CON-LEG101-ABS-1080 | As-Built DWGs Submittal for Fence & Gate | 2027-12-15 → 2027-12-14 (-1d) | 2027-12-21 → 2027-12-20 (-1d) |  | -43d → -42d |
| CON-LEG101-ABS-1110 | As-Built DWGs Submittal for Road Works | 2028-01-09 → 2028-01-16 (+7d) | 2028-01-23 → 2028-01-30 (+7d) |  | -115.4d → -121.4d |
| CON-LEG101-ABS-1020 | As-Built DWGs Submittal for Public Water Utility Distribution | 2028-01-11 → 2028-01-18 (+7d) | 2028-01-24 → 2028-01-31 (+7d) |  | -107d → -113d |
| CON-LEG101-ABS-1050 | As-Built DWGs Submittal for Stormwater Utilities | 2028-01-13 → 2028-01-20 (+7d) | 2028-01-27 → 2028-02-03 (+7d) |  | -103.4d → -109.4d |
| CON-LEG101-ABS-1060 | As-Built DWGs Submittal for Bridge Work | 2028-01-17 → 2028-01-24 (+7d) | 2028-01-31 → 2028-02-07 (+7d) |  | -92.2d → -98.2d |
| CON-LEG101-ABS-1030 | As-Built DWGs Submittal for TSE Network | 2028-01-24 → 2028-01-31 (+7d) | 2028-02-07 → 2028-02-14 (+7d) |  | -98.4d → -104.4d |
| CON-LEG101-ABS-1040 | As-Built DWGs Submittal for Sanitary Sewerage | 2028-01-27 → 2028-02-03 (+7d) | 2028-02-10 → 2028-02-17 (+7d) |  | -103.4d → -109.4d |
| CON-LEG101-ABS-1100 | As-Built DWGs Submittal for Road Lighting | 2028-01-29 → 2028-02-05 (+7d) | 2028-02-10 → 2028-02-17 (+7d) |  | -92d → -98d |
| CON-LEG101-ABS-1000 | As-Built DWGs Submittal for Telecommunications Work | 2028-02-02 → 2028-02-09 (+7d) | 2028-02-16 → 2028-02-23 (+7d) |  | -94.2d → -100.2d |
| CON-LEG101-ABS-1070 | As-Built DWGs Submittal for CCTV feeding system and GSM | 2028-02-06 → 2028-02-13 (+7d) | 2028-02-15 → 2028-02-22 (+7d) |  | -90.8d → -96.8d |
| CON-LEG101-ABS-1010 | As-Built DWGs Submittal for Electrical Network | 2028-02-10 → 2028-02-17 (+7d) | 2028-02-24 → 2028-03-02 (+7d) |  | -103.4d → -109.4d |
| CON-LEG101-ABS-1120 | As-Built DWGs Submittal for Earthing System | 2028-02-12 → 2028-02-19 (+7d) | 2028-02-16 → 2028-02-23 (+7d) |  | -92d → -98d |
| CON-LEG101-ABS-1090 | As-Built DWGs Submittal for Irrigation and Landscape | 2028-03-14 → 2028-03-06 (-8d) | 2028-03-20 → 2028-03-11 (-9d) |  | -119.5d → -112d |
| 2 | **As-Built DWGs Approval** | 2027-12-22 → 2027-12-21 (-1d) | 2028-03-26 → 2028-03-28 (+2d) |  |  |
| CON-LEG101-ABA-1080 | As- Built DWGs Approval for Fence & Gate | 2027-12-22 → 2027-12-21 (-1d) | 2027-12-27 → 2027-12-26 (-1d) |  | -43d → -42d |
| CON-LEG101-ABA-1110 | As- Built DWGs Approval for Road Works | 2028-01-23 → 2028-01-30 (+7d) | 2028-02-03 → 2028-02-10 (+7d) |  | -115.4d → -121.4d |
| CON-LEG101-ABA-1020 | As- Built DWGs Approval for Public Water Utility Distribution | 2028-02-03 → 2028-02-10 (+7d) | 2028-02-15 → 2028-02-22 (+7d) |  | -115.4d → -121.4d |
| CON-LEG101-ABA-1030 | As- Built DWGs Approval for TSE Network | 2028-02-07 → 2028-02-14 (+7d) | 2028-02-19 → 2028-02-26 (+7d) |  | -98.4d → -104.4d |
| CON-LEG101-ABA-1100 | As- Built DWGs Approval for Road Lighting | 2028-02-12 → 2028-02-19 (+7d) | 2028-02-22 → 2028-02-29 (+7d) |  | -92d → -98d |
| CON-LEG101-ABA-1050 | As- Built DWGs Approval for Stormwater Utilities | 2028-02-15 → 2028-02-22 (+7d) | 2028-02-27 → 2028-03-05 (+7d) |  | -115.4d → -121.4d |
| CON-LEG101-ABA-1070 | As- Built DWGs Approval for CCTV feeding system and GSM | 2028-02-15 → 2028-02-22 (+7d) | 2028-02-21 → 2028-02-28 (+7d) |  | -90.8d → -96.8d |
| CON-LEG101-ABA-1000 | As- Built DWGs Approval for Telecommunications Work | 2028-02-16 → 2028-02-23 (+7d) | 2028-02-26 → 2028-03-04 (+7d) |  | -94.2d → -100.2d |
| CON-LEG101-ABA-1120 | As- Built DWGs Approval for Earthing System | 2028-02-17 → 2028-02-24 (+7d) | 2028-02-22 → 2028-02-29 (+7d) |  | -92d → -98d |
| CON-LEG101-ABA-1060 | As- Built DWGs Approval for Bridge Work | 2028-02-27 → 2028-03-05 (+7d) | 2028-03-09 → 2028-03-16 (+7d) |  | -115.4d → -121.4d |
| CON-LEG101-ABA-1090 | As- Built DWGs Approval for Irrigation and Landscape | 2028-03-20 → 2028-03-12 (-8d) | 2028-03-26 → 2028-03-16 (-10d) |  | -119.5d → -112d |
| CON-LEG101-ABA-1010 | As- Built DWGs Approval for Electrical Network | 2028-03-09 → 2028-03-16 (+7d) | 2028-03-21 → 2028-03-28 (+7d) |  | -115.4d → -121.4d |
| CON-LEG101-ABA-1040 | As- Built DWGs Approval for Sanitary Sewerage | 2028-03-09 → 2028-03-16 (+7d) | 2028-03-21 → 2028-03-28 (+7d) |  | -115.4d → -121.4d |
| 2 | **Demobilization** | 2028-03-26 → 2028-03-28 (+2d) | 2028-04-06 → 2028-04-09 (+3d) |  |  |
| CON-LEG101-DM-1000 | Demobilization of Manpower | 2028-03-26 → 2028-03-28 (+2d) | 2028-04-01 → 2028-04-03 (+2d) |  | -119.5d → -121.4d |
| CON-LEG101-DM-1010 | Removal of Equipment from Site | 2028-03-26 → 2028-03-28 (+2d) | 2028-04-01 → 2028-04-03 (+2d) |  | -119.5d → -121.4d |
| CON-LEG101-DM-1020 | Site Clean Up | 2028-03-26 → 2028-03-28 (+2d) | 2028-04-01 → 2028-04-03 (+2d) |  | -119.5d → -121.4d |
| CON-LEG101-DM-1030 | Removal of Site Offices and Structures | 2028-03-26 → 2028-03-28 (+2d) | 2028-04-01 → 2028-04-03 (+2d) |  | -119.5d → -121.4d |
| CON-LEG101-DM-1040 | Restoration of Ground Surfaces | 2028-04-01 → 2028-04-03 (+2d) | 2028-04-06 → 2028-04-09 (+3d) |  | -119.5d → -121.4d |
