# ADDITIONAL DEVELOPMENT IN TABOUK INDUSTRIAL CITY

How a schedule from Primavera P6 changed from version to version. A marks actual dates.

## Version 1 (data date 2026-06-03, saved 2026-06-20, file REVICED SCHEDULE REV 02.xer)

| ID | WBS | Task | Duration | Start | Finish | Predecessors | Complete | Total float | Constraint |
| --- | --- | --- | --- | --- | --- | --- | --- | --- | --- |
|  | GENERAL | **MILESTONS** |  | 2025-09-04 | 2027-09-03 |  |  |  |  |
|  | 2 | **CONTRACTUAL MILESTONES** |  | 2025-09-04 | 2027-09-03 |  |  |  |  |
| TAGNCM0001 |  | Project Start | 0d | 2025-09-04 A | 2025-09-04 A |  | 100% |  |  |
| TAGNCM0002 |  | Site Hand Over | 0d | 2025-09-04 A | 2025-09-04 A | TAGNCM0001 SS | 100% |  |  |
| TAGNCM0003 |  | Project finish | 0d | 2027-09-03 | 2027-09-03 | TAGNML0013 FF, TAGNML0014 FF, TAGNML0015 FF, TAGNML0016 FF, TAGNML0017 FF, TAGNML0018 FF, TAGNML0019 FF, TAGNML0020 FF, TAPCDZ00000032 FF, TAGNZM0004 FF, TAGNZM0006 FF, TAGNML0032 FF |  | 0d |  |
|  | 1 | **NET WORK MILESTONES** |  | 2025-10-11 | 2027-09-03 |  |  |  |  |
| TAGNML0004 |  | Start Road Works | 0d | 2025-10-11 A | 2025-10-11 A | TAGNCM0002 SS, TAGNPS0001, TAGNPS0002 SS | 100% |  |  |
| TAGNML0011 |  | Start Sewerage Networks | 0d | 2025-11-22 A | 2025-11-22 A | TAGNCM0002 SS, TAENMSSW0002 | 100% |  |  |
| TAGNML0012 |  | Start Storm Water Drainage Networks | 0d | 2025-12-31 A | 2025-12-31 A | TAGNCM0002 SS, TAENMSST0002, TAENMSST0004 | 100% |  |  |
| TAGNML0022 |  | Start works for Amana Road | 0d | 2026-03-15 A | 2026-03-15 A | TAGNML0004 SS | 100% |  | start on 2026-01-25 |
| TAGNML0009 |  | Start Potable Water Networks | 0d | 2026-04-01 A | 2026-04-01 A | TAGNCM0002 SS, TAENMSPT0002 | 100% |  |  |
| TAGNML0010 |  | Start TSE Networks | 0d | 2026-04-01 A | 2026-04-01 A | TAGNCM0002 SS, TAENMSTS0002 | 100% |  |  |
| TAGNML0005 |  | Start Electrical Works | 0d | 2026-05-12 A | 2026-05-12 A | TAGNCM0002 SS | 100% |  |  |
| TAGNML0006 |  | Start Teleommunications Works | 0d | 2026-06-03 | 2026-06-03 | TAGNCM0002 SS, TAENMSTC0002 |  | 142d |  |
| TAGNML0008 |  | Start CCTV Works | 0d | 2026-06-03 | 2026-06-03 | TAGNCM0002 SS, TAENMSCC0002 |  | 97d |  |
| TAGNML0018 |  | Finish TSE Networks | 0d | 2027-07-21 | 2027-07-21 | TAEXTSCC030005 FF, TAENMSTS0002 FF, TACOFTFT0022 FF, TAPQDVTS00021 FF |  | 38d |  |
| TAGNML0019 |  | Finish Sewerage Networks | 0d | 2027-08-14 | 2027-08-14 | TAEXSWCL030006 FF, TAEXSWCL040006 FF, TACOFTAD0023 FF |  | 18d |  |
| TAGNML0020 |  | Finish Storm Water Drainage Networks | 0d | 2027-08-14 | 2027-08-14 | TAEXSTCC030007 FF, TAENMSST0002 FF, TAENMSST0004 FF, TACOFTAD0024 FF, TAEXSTCSWP00141 FF, TAEXSTCSWP0010 FF |  | 18d |  |
| TAGNML0015 |  | Finish Teleommunications Works | 0d | 2027-08-16 | 2027-08-16 | TACOFTAD0019 FF |  | 16d |  |
| TAGNML0017 |  | Finish Potable Water Networks | 0d | 2027-08-21 | 2027-08-21 | TAEXPTCC030007 FF, TACOFTFT0021 FF, TAPQDVPT00031 FF |  | 12d |  |
| TAGNML0032 |  | Finish works for Amana Road | 0d | 2027-08-23 | 2027-08-23 | TAGNML0022 SS+90d, TAEXRDCA050007 FF, TAEXRDCA030004 FF, TAEXRDCA050006 FF |  | 10d |  |
| TAGNML0013 |  | Finish Road Works | 0d | 2027-09-02 | 2027-09-02 | TAENMSRD0004 FF, TAENMSRD0006 FF, TAPQDVRD0007 FF, TACOFTAD0017 FF, TAGNMZ0009 FF, TAPQDVRD0005 FF, TAPQDVRD00091 FF |  | 1d |  |
| TAGNML0014 |  | Finish Electrical Works | 0d | 2027-09-03 | 2027-09-03 | TAENMSEL0002 FF, TACOFTAD0018 FF, TAEXELCU260007 FF |  | 0d |  |
| TAGNML0016 |  | Finish CCTV Works | 0d | 2027-09-03 | 2027-09-03 | TAENMSCC0002 FF, TACOFTFT0020 FF |  | 0d |  |
|  | 4 | **ZONES MILESTONES** |  | 2025-09-04 | 2027-08-15 |  |  |  |  |
| TAGNZM0003 |  | Start Zone 3 | 0d | 2025-09-04 A | 2025-09-04 A | TAEXSTCSWP0001 SS | 100% |  |  |
| TAGNZM0002 |  | Start Zone 2 | 0d | 2025-10-11 A | 2025-10-11 A | TAEXRDCC010001 SS, TAEXRDC L020001 | 100% |  |  |
| TAGNZM0001 |  | Start Zone 1 | 0d | 2025-10-14 A | 2025-10-14 A | TAGNPS0003 | 100% |  |  |
| TAGNZM0004 |  | Finish Zone 1 | 0d | 2027-06-05 | 2027-06-05 | TAEXRDCC020012 FF |  | 78d |  |
| TAGNZM0005 |  | Finish Zone 2 | 0d | 2027-07-25 | 2027-07-25 | TAEXRDC L020012 FF |  | 10d |  |
| TAGNZM0006 |  | Finish Zone 3 | 0d | 2027-08-15 | 2027-08-15 | TAEXPTCU290008 FF |  | 17d |  |
|  | 3 | **PRELIMINARY SUBMITTALS** |  | 2025-09-09 | 2026-08-11 |  |  |  |  |
| TAGNPS0001 |  | Initial survying Review and approval | 28d | 2025-09-09 A | 2025-10-11 A | TAGNMZ0001 SS+15d | 100% |  |  |
| TAGNPS0005 |  | HSE & Qui;ity Plan | 44d | 2025-10-01 A | 2025-11-20 A | TAGNMZ0002 SS+10d | 100% |  |  |
| TAGNPS0003 |  | Base line Schedule Review and approval | 21d | 2025-10-09 A | 2025-11-02 A | TAGNMZ0001 SS+15d | 100% |  |  |
| TAGNPS0002 |  | Shop drawing complete | 167d | 2025-11-20 A | 2026-08-11 | TAGNMZ0002 SS |  | 61d |  |
|  | 5 | **MOBILIZATION** |  | 2025-09-04 | 2027-08-23 |  |  |  |  |
|  | 2 | **Site Facilites and Offices** |  | 2025-09-04 | 2027-08-23 |  |  |  |  |
| TAGNMZ0001 |  | Mobilization works for Manpower and Equipment | 112d | 2025-09-04 A | 2026-01-12 A | TAGNCM0002 SS | 100% |  |  |
| TAGNMZ0002 |  | Office Ready | 82d | 2025-09-07 A | 2025-12-10 A | TAGNMZ0001 SS+21d | 100% |  |  |
| TAGNMZ0007 |  | Office Operation | 230.5d | 2025-09-07 A | 2026-06-02 A | TAGNMZ0002, TAGNMZ0006 | 100% |  |  |
| TAGNMZ0003 |  | Housing portable cabins assembling | 42d | 2025-09-10 A | 2025-10-28 A | TAGNMZ0001 SS+5d | 100% |  |  |
| TAGNMZ0004 |  | laboratory and storage facilities | 58d | 2025-10-08 A | 2025-12-14 A | TAGNMZ0001 FS+25d, TAGNMZ0003, TAGNPS0005 | 100% |  |  |
| TAGNMZ0006 |  | Material Store with Fence | 23d | 2025-10-12 A | 2025-11-07 A | TAGNMZ0005 | 100% |  |  |
| TAGNMZ0005 |  | Project Sign manufacturing and installation | 35d | 2025-11-01 A | 2025-12-10 A | TAGNMZ0001 SS+15d, TAGNMZ0001, TAGNMZ0004 | 100% |  |  |
| TAGNMZ9 |  | Office Operation part 01 | 383d | 2026-06-03 | 2027-08-23 | TAGNMZ0007 |  | 0d |  |
|  | 1 | **Preliminaries** |  | 2025-11-25 | 2026-01-05 |  |  |  |  |
| TAGNMZ0008 |  | Prepare & Submit Soil Investigation | 34d | 2025-11-25 A | 2026-01-03 A | TAGNMZ0001 | 100% |  |  |
| TAGNMZ0009 |  | Review and Approval soil Investigation | 33d | 2025-11-29 A | 2026-01-05 A | TAGNMZ0008 | 100% |  |  |
|  | 6 | **ENGINEERING** |  | 2025-10-04 | 2026-06-02 |  |  |  |  |
|  | 2 | **Shop Drawings Submittls** |  | 2025-10-21 | 2026-06-02 |  |  |  |  |
|  | 9 | **Shop Drawing for Roads** |  | 2025-10-28 | 2026-06-02 |  |  |  |  |
| TAENSDRD0001 |  | Roads Shop dwg. Prepare & Submit | 187d | 2025-10-28 A | 2026-06-02 A | TAGNMZ0001 SS | 100% |  |  |
| TAENSDRD0002 |  | Roads Shop dwg. Review & Approval | 132.48d | 2025-12-30 A | 2026-06-02 A | TAENSDRD0001 FF | 100% |  |  |
|  | 1 | **Shop Drawing for Electrical Works** |  | 2025-12-31 | 2026-01-21 |  |  |  |  |
| TAENSDEL0001 |  | Shop dwg. Prepare ,submitt | 19d | 2025-12-31 A | 2026-01-21 A | TAENSDRD0001, TAENSDTS0001 | 100% |  |  |
| TAENSDEL0002 |  | Shop dwg. Review and Approval | 14d | 2026-01-06 A | 2026-01-21 A | TAENSDEL0001 FF | 100% |  |  |
|  | 2 | **Shop Drawing for Telecommunications** |  | 2026-01-21 | 2026-06-02 |  |  |  |  |
| TAENSDTL0001 |  | Shop dwg. Prepare and submitt | 113d | 2026-01-21 A | 2026-06-02 A | TAENSDEL0001 SS | 100% |  |  |
| TAENSDTL0002 |  | Shop dwg. Review and Approval | 105d | 2026-02-01 A | 2026-06-02 A | TAENSDTL0001 FF | 100% |  |  |
|  | 3 | **Shop Drawing for CCTV Networks** |  | 2026-01-10 | 2026-01-14 |  |  |  |  |
| TAENSDCC0001 |  | Shop Dwg Prepare and Submit | 5d | 2026-01-10 A | 2026-01-14 A | TAENSDTL0001 SS | 100% |  |  |
| TAENSDCC0002 |  | Shop Dwg. Review and approval | 2d | 2026-01-13 A | 2026-01-14 A | TAENSDCC0001 FF | 100% |  |  |
|  | 4 | **Shop Drawing for Potable Water** |  | 2025-11-02 | 2026-01-13 |  |  |  |  |
| TAENSDPT0001 |  | Shop dwg. Prepare and submitt | 63d | 2025-11-02 A | 2026-01-13 A | TAENSDST0001 | 100% |  |  |
| TAENSDPT0002 |  | Shop dwg.Review and Approval | 2d | 2026-01-12 A | 2026-01-13 A | TAENSDPT0001 SS+15d | 100% |  |  |
|  | 5 | **Shop Drawing for TSE Networks** |  | 2025-11-02 | 2026-01-21 |  |  |  |  |
| TAENSDTS0001 |  | Shop dwg. Prepare and submitt | 70d | 2025-11-02 A | 2026-01-21 A | TAENSDPT0001 SS | 100% |  |  |
| TAENSDTS0002 |  | Shop dwg. Review and Approval | 2d | 2026-01-20 A | 2026-01-21 A | TAENSDTS0001 FF+10d | 100% |  |  |
|  | 6 | **Shop Drawing for Sewerage Networks** |  | 2025-10-26 | 2026-02-28 |  |  |  |  |

| ID | WBS | Task | Duration | Start | Finish | Predecessors | Complete |
| --- | --- | --- | --- | --- | --- | --- | --- |
| TAENSDSW0001 |  | Shop dwg. Prepare and Submitt | 108d | 2025-10-26 A | 2026-02-28 A | TAGNMZ0001 SS+2d | 100% |
| TAENSDSW0002 |  | Shop dwg. Review and Approval | 59d | 2025-12-22 A | 2026-02-28 A | TAENSDSW0001 | 100% |
|  | 7 | **Shop Drawing for Storm Networks** |  | 2025-10-21 | 2026-01-28 |  |  |
| TAENSDST0003 |  | Shop dwg. Prepare and submit For Ponds | 77d | 2025-10-21 A | 2026-01-18 A | TAGNMZ0001 SS+15d | 100% |
| TAENSDST0005 |  | Shop dwg. Prepare and submit For Dike | 85d | 2025-10-22 A | 2026-01-28 A | TAGNMZ0001 SS+7d | 100% |
| TAENSDST0001 |  | Shop dwg. Prepare and submit For Storm Networks | 73d | 2025-10-26 A | 2026-01-18 A | TAENSDSW0001 SS, TAENSDST0006 SS | 100% |
| TAENSDST0002 |  | Shop Dwg.Review and approval for Storm Networks | 14d | 2026-01-03 A | 2026-01-18 A | TAENSDST0001 SS | 100% |
| TAENSDST0004 |  | Shop Dwg.Review and approval for Ponds | 4d | 2026-01-14 A | 2026-01-18 A | TAENSDST0003, TAENSDST0003 FF | 100% |
| TAENSDST0006 |  | Shop Dwg.Review and approval for Dike | 2d | 2026-01-27 A | 2026-01-28 A | TAENSDST0005, TAENSDST0005 FF | 100% |
|  | 3 | **Prequalification for Suppliers** |  | 2025-10-04 | 2026-04-23 |  |  |
|  | 9 | **Submittle of Material and Prequalification Road Works** |  | 2025-10-04 | 2026-04-18 |  |  |
| TAENPQRD0005 |  | Submit Prequalification for Laboratory testing | 37d | 2025-10-04 A | 2025-11-15 A | TAGNMZ0001 | 100% |
| TAENPQRD0006 |  | Prequalification Approval for Laboratory testing | 2d | 2025-10-16 A | 2025-10-18 A | TAENPQRD0005 | 100% |
| TAENPQRD0001 |  | Submit Prequalification for Supplier Kerbs and Interlocking | 1d | 2025-10-22 A | 2025-10-22 A | TAENSDRD0002 FS+51d | 100% |
| TAENPQRD0002 |  | Prequalification Approval for Kerps and Interlocking Suppliers | 11d | 2025-10-22 A | 2025-11-03 A | TAENPQRD0001 | 100% |
| TAENPQRD0003 |  | Submit Prequalification for Supplier Road Marking | 3d | 2026-04-15 A | 2026-04-18 A | TAENSDRD0002 FS+51d | 100% |
| TAENPQRD0004 |  | Prequalification Approval for Road Marking | 2d | 2026-04-16 A | 2026-04-18 A | TAENPQRD0003 | 100% |
|  | 1 | **Submittle of Material and Prequalification for Electrical Works** |  | 2026-01-14 | 2026-03-16 |  |  |
| TAENPQEL0004 |  | Prequalification Approval for Unit Stations | 28d | 2026-01-14 A | 2026-02-15 A | TAENPQEL0003 FS+13d, TAENPQEL0003 FF | 100% |
| TAENPQEL0005 |  | Submit Prequalification for Lighting Poles | 2d | 2026-01-14 A | 2026-01-15 A | TAENSDEL0002, TAENPQEL0003 | 100% |
| TAENPQEL0007 |  | Submit Prequalification for Luminares | 2d | 2026-01-14 A | 2026-01-15 A | TAENSDEL0002, TAENPQEL0005 | 100% |
| TAENPQEL0008 |  | Prequalification Approval for Luminares | 2d | 2026-01-14 A | 2026-01-15 A | TAENPQEL0007 FS+13d | 100% |
| TAENPQEL0006 |  | Prequalification Approval for Lighting Poles | 1d | 2026-01-15 A | 2026-01-16 A | TAENPQEL0005 FS+13d, TAENPQEL0004 | 100% |
| TAENPQEL0011 |  | Submit Prequalification for Ducts | 2d | 2026-01-22 A | 2026-01-24 A | TAENSDEL0002, TAENPQEL0009 | 100% |
| TAENPQEL0012 |  | Prequalification Approval for Ducts | 2d | 2026-01-22 A | 2026-01-24 A | TAENPQEL0011 | 100% |
| TAENPQEL0001 |  | Submit Prequalification for Cables Suppliers | 2d | 2026-02-12 A | 2026-02-14 A | TAENPQRD0001, TAENPQTS0001 | 100% |
| TAENPQEL0003 |  | Submit Prequalification for Unit Stations | 2d | 2026-02-12 A | 2026-02-14 A | TAENSDEL0002 FS+61d | 100% |
| TAENPQEL0002 |  | Prequalification Approval for Cables Suppliers | 2d | 2026-02-14 A | 2026-02-15 A | TAENPQEL0001 | 100% |
| TAENPQEL0009 |  | Submit Prequalification for Precast Drawpits and Foundations | 1d | 2026-03-15 A | 2026-03-15 A | TAENSDEL0002, TAENPQEL0007 | 100% |
| TAENPQEL0010 |  | Prequalification Approval for Precast Drawpits and Foundations | 2d | 2026-03-15 A | 2026-03-16 A | TAENPQEL0009 FS+13d | 100% |
|  | 2 | **Submittle of Material and Prequalification for Telecommunications** |  | 2026-01-22 | 2026-01-24 |  |  |
| TAENPQTL0001 |  | Submit Prequalification for Ducts | 2d | 2026-01-22 A | 2026-01-24 A | TAENPQEL0001 | 100% |
| TAENPQTL0002 |  | Prequalification Approval for Ducts | 2d | 2026-01-22 A | 2026-01-24 A | TAENPQTL0001 | 100% |
| TAENPQTL0003 |  | Submit Prequalification for Manholes | 2d | 2026-01-22 A | 2026-01-24 A | TAENSDTL0002 FS+101d | 100% |
| TAENPQTL0004 |  | Prequalification Approval for Manholes | 2d | 2026-01-22 A | 2026-01-24 A | TAENPQTL0003 | 100% |
|  | 3 | **Submittle of Material and Prequalification for CCTV Networks** |  | 2026-01-26 | 2026-04-23 |  |  |
| TAENPQCC0001 |  | Prepare Material Submittle for CCTV System | 76d | 2026-01-26 A | 2026-04-23 A | TAENPQTL0001 | 100% |
| TAENPQCC0002 |  | Review and Approval for Material Submittle for CCTV System | 76d | 2026-01-26 A | 2026-04-23 A | TAENPQCC0001 | 100% |
|  | 4 | **Submittle of Material and Prequalification for Potable Water** |  | 2025-11-13 | 2025-11-19 |  |  |
| TAENPQPT0003 |  | Prepare Material Submittle for Valves | 1d | 2025-11-13 A | 2025-11-13 A | TAENSDPT0002 SS+58d | 100% |
| TAENPQPT0004 |  | Review and Approval of Material for Valves | 5d | 2025-11-13 A | 2025-11-18 A | TAENPQPT0003 | 100% |
| TAENPQPT0005 |  | Prepare Material Submittle for Fire Hydrant | 1d | 2025-11-13 A | 2025-11-13 A | TAENPQPT0003 | 100% |
| TAENPQPT0006 |  | Review and Approval of Material for Fire Hydrant | 6d | 2025-11-13 A | 2025-11-19 A | TAENPQPT0005 SS | 100% |
| TAENPQPT0001 |  | Prepare Material Submittle for HDPE Pipes | 3d | 2025-11-15 A | 2025-11-17 A | TAENPQST0001 | 100% |
| TAENPQPT0002 |  | Review and Approval of Material Submittle for HDPE Pipes | 3d | 2025-11-15 A | 2025-11-17 A | TAENPQPT0001 | 100% |
|  | 5 | **Submittle of Material and Prequalification for TSE Networks** |  | 2025-11-13 | 2025-11-24 |  |  |
| TAENPQTS0003 |  | Prepare Material Submittle for Valves | 1d | 2025-11-13 A | 2025-11-13 A | TAENSDTS0002 FS+58d | 100% |
| TAENPQTS0004 |  | Review and Approval of Material for Valves | 10d | 2025-11-13 A | 2025-11-24 A | TAENPQTS0003 | 100% |
| TAENPQTS0001 |  | Prepare Material Submittle for HDPE Pipes | 1d | 2025-11-15 A | 2025-11-15 A | TAENPQPT0001 | 100% |
| TAENPQTS0002 |  | Review and Approval of Material Submittle for HDPE Pipes | 3d | 2025-11-15 A | 2025-11-17 A | TAENPQTS0001 | 100% |
|  | 6 | **Submittle of Material and Prequalification for Sewerage Networks** |  | 2025-11-08 | 2025-11-13 |  |  |
| TAENPQSW0001 |  | Prepare Material Submittle for GRP Pipes | 6d | 2025-11-08 A | 2025-11-13 A | TAENSDSW0002 SS+38d | 100% |
| TAENPQSW0002 |  | Review and Approval of Material Submittle for GRP Pipes | 6d | 2025-11-08 A | 2025-11-13 A | TAENPQSW0001 | 100% |
| TAENPQSW0003 |  | Prepare Material Submittle for Manhole | 6d | 2025-11-08 A | 2025-11-13 A | TAENSDSW0002, TAENPQSW0001 | 100% |
| TAENPQSW0004 |  | Review and Approval of Material Submittle for Manhole | 6d | 2025-11-08 A | 2025-11-13 A | TAENPQSW0003 | 100% |
|  | 7 | **Submittle of Material and Prequalification for Storm Networks** |  | 2025-10-22 | 2025-11-17 |  |  |
| TAENPQST0011 |  | Prepare Material Submittle for Concrete Works at Ponds | 1d | 2025-10-22 A | 2025-10-22 A | TAENSDST0004 FS+30d | 100% |
| TAENPQST0012 |  | Review and Approval of Material Submittle for Concrete Works at Ponds | 11d | 2025-10-22 A | 2025-11-03 A | TAENPQST0011 | 100% |
| TAENPQST0001 |  | Prepare Material Submittle for GRP Pipes | 1d | 2025-11-08 A | 2025-11-08 A | TAENPQSW0001 | 100% |
| TAENPQST0002 |  | Review and Approval of Material Submittle for GRP Pipes | 6d | 2025-11-08 A | 2025-11-13 A | TAENPQST0001 | 100% |
| TAENPQST0005 |  | Prepare Material Submittle for Box Culvert | 1d | 2025-11-15 A | 2025-11-15 A | TAENSDST0002, TAENPQST0003 | 100% |
| TAENPQST0006 |  | Review and Approval of Material Submittle for Box Culvert | 3d | 2025-11-15 A | 2025-11-17 A | TAENPQST0005 FS+3d | 100% |
| TAENPQST0007 |  | Prepare Material Submittle for Catch Basin | 1d | 2025-11-15 A | 2025-11-15 A | TAENSDST0002, TAENPQST0005 | 100% |
| TAENPQST0008 |  | Review and Approval of Material Submittle for Catch Basin | 3d | 2025-11-15 A | 2025-11-17 A | TAENPQST0007 | 100% |
| TAENPQST0009 |  | Prepare Material Submittle for Precast Manhole | 1d | 2025-11-15 A | 2025-11-15 A | TAENSDST0002, TAENPQST0007 | 100% |
| TAENPQST0010 |  | Review and Approval of Material Submittle for Precast Manhole | 2d | 2025-11-15 A | 2025-11-16 A | TAENPQST0009 | 100% |
| TAENPQST0003 |  | Prepare Material Submittle for UPVC Pipes | 1d | 2025-11-16 A | 2025-11-16 A | TAENSDST0002 SS+53d | 100% |
| TAENPQST0004 |  | Review and Approval of Material Submittle for UPVC Pipes | 2d | 2025-11-16 A | 2025-11-17 A | TAENPQST0003 | 100% |
|  | 4 | **Method Statement** |  | 2025-11-25 | 2026-04-18 |  |  |
|  | 9 | **Earth Works (Excavation & Backfilling)** |  | 2025-11-25 | 2025-11-29 |  |  |

| ID | WBS | Task | Duration | Start | Finish | Predecessors | Complete | Total float |
| --- | --- | --- | --- | --- | --- | --- | --- | --- |
| TAENMSRD0001 |  | Prepare and Submit MOS for Earth works | 4d | 2025-11-25 A | 2025-11-29 A | TAENSDRD0002 FS+51d | 100% |  |
| TAENMSRD0002 |  | Review and Approval MOS for Earth worksrs | 1d | 2025-11-28 A | 2025-11-29 A | TAENMSRD0001 | 100% |  |
|  | 8 | **Asphalt works** |  | 2025-12-06 | 2026-01-18 |  |  |  |
| TAENMSRD0003 |  | Prepare and Submit MOS for Asphalt works | 36d | 2025-12-06 A | 2026-01-15 A | TAENMSRD0001, TAENMSRD0002 | 100% |  |
| TAENMSRD0004 |  | Revies and Approval MOS for Asphalt works | 2d | 2026-01-17 A | 2026-01-18 A | TAENMSRD0003 | 100% |  |
|  | 10 | **Precast Concrete (Curbstone & Interlocking)** |  | 2026-04-15 | 2026-04-18 |  |  |  |
| TAENMSRD0005 |  | Prepare and Submit MOS for Curbstone and Interlocking | 2d | 2026-04-15 A | 2026-04-16 A | TAENMSRD0003 | 100% |  |
| TAENMSRD0006 |  | Review and Approval MOS for Curbstone and Interlocking | 2d | 2026-04-16 A | 2026-04-18 A | TAENMSRD0005 | 100% |  |
|  | 1 | **Street Lighting** |  | 2026-01-19 | 2026-01-21 |  |  |  |
| TAENMSEL0001 |  | Prepare and Submit MOS for Street Lighting | 2d | 2026-01-19 A | 2026-01-20 A | TAENMSRD0001, TAENSDEL0002 FS+100d | 100% |  |
| TAENMSEL0002 |  | Review and Approval MOS for Street Lighting | 2d | 2026-01-20 A | 2026-01-21 A | TAENMSEL0001 | 100% |  |
|  | 2 | **Telecommunications** |  | 2026-02-07 | 2026-02-08 |  |  |  |
| TAENMSTC0001 |  | Prepare and Submit MOS for TC | 2d | 2026-02-07 A | 2026-02-08 A | TAENMSEL0001 | 100% |  |
| TAENMSTC0002 |  | Review and Approval MOS for TC | 2d | 2026-02-07 A | 2026-02-08 A | TAENMSTC0001 | 100% |  |
|  | 3 | **CCTV Networks** |  | 2026-02-07 | 2026-02-08 |  |  |  |
| TAENMSCC0001 |  | Prepare and Submit MOS for CCTV System | 2d | 2026-02-07 A | 2026-02-08 A | TAENMSTC0001 | 100% |  |
| TAENMSCC0002 |  | Review and Approval MOS for CCTV Syestem | 2d | 2026-02-07 A | 2026-02-08 A | TAENMSCC0001 | 100% |  |
|  | 4 | **Potable Water Networks** |  | 2025-11-25 | 2025-11-26 |  |  |  |
| TAENMSPT0001 |  | Prepare and Submit MOS for Potable Network | 2d | 2025-11-25 A | 2025-11-26 A | TAENSDPT0002 FS+58d | 100% |  |
| TAENMSPT0002 |  | Review and Approval MOS for Potable Networks | 2d | 2025-11-25 A | 2025-11-26 A | TAENMSPT0001 | 100% |  |
|  | 5 | **TSE Networks** |  | 2026-03-01 | 2026-03-08 |  |  |  |
| TAENMSTS0001 |  | Prepare and Submit MOS for TSE Network | 6d | 2026-03-01 A | 2026-03-07 A | TAENSDTS0002 FS+58d | 100% |  |
| TAENMSTS0002 |  | Review and Approval MOS for TSENetworks | 7d | 2026-03-01 A | 2026-03-08 A | TAENMSTS0001 | 100% |  |
|  | 6 | **Sewerage Networks** |  | 2025-12-16 | 2025-12-18 |  |  |  |
| TAENMSSW0001 |  | Prepare and Submit MOS for Sewer Network | 3d | 2025-12-16 A | 2025-12-18 A | TAENSDSW0002 FS+38d | 100% |  |
| TAENMSSW0002 |  | Review and Approval MOS for Sewer Networks | 2d | 2025-12-17 A | 2025-12-18 A | TAENMSSW0001 | 100% |  |
|  | 7 | **Storm Networks** |  | 2025-12-20 | 2025-12-24 |  |  |  |
| TAENMSST0001 |  | Prepare and Submit MOS for Storm Network | 2d | 2025-12-20 A | 2025-12-21 A | TAENSDST0002 FS+53d | 100% |  |
| TAENMSST0002 |  | Review and Approval MOS for Storm Networks | 5d | 2025-12-20 A | 2025-12-24 A | TAENMSST0001 | 100% |  |
|  | 11 | **Precast Box Culvert** |  | 2025-12-20 | 2025-12-24 |  |  |  |
| TAENMSST0003 |  | Prepare and Submit MOS for Box Culvert | 2d | 2025-12-20 A | 2025-12-21 A | TAENMSST0001 | 100% |  |
| TAENMSST0004 |  | Review and Approval MOS Box Culvert | 5d | 2025-12-20 A | 2025-12-24 A | TAENMSST0003 | 100% |  |
|  | 17 | **PROCUREMENT** |  | 2025-10-27 | 2027-09-02 |  |  |  |
|  | 8 | **Material Purchase Order** |  | 2025-11-01 | 2026-09-08 |  |  |  |
|  | 9 | **Material Purchase Order for Road Works** |  | 2025-11-01 | 2026-06-02 |  |  |  |
| TAPQPORD0001 |  | Roads material Approved suppliers and issue po | 183.48d | 2025-11-01 A | 2026-06-02 A | TAENSDRD0001 FF, TAENSDRD0002 FS+63d, TAENPQRD0002, TAENPQRD0004 | 100% |  |
|  | 1 | **Material Purchase Order for Electrical Works** |  | 2026-04-23 | 2026-06-10 |  |  |  |
| TAPQPOEL0001 |  | Electrical material Approved suppliers and issue po | 35d | 2026-04-23 A | 2026-06-02 A | TAENSDEL0001, TAENSDEL0002, TAENPQEL0002, TAENPQEL0004, TAENPQEL0006, TAENPQEL0008, TAENPQEL0010, TAENPQEL0012 FS+17d | 100% |  |
| TAPQPOEL1 |  | Electrical material Approved suppliers and issue po Part 01 | 7d | 2026-06-03 | 2026-06-10 | TAPQPOEL0001 |  | 0d |
|  | 2 | **Material Purchase Order for Telecommunication** |  | 2026-06-03 | 2026-07-15 |  |  |  |
| TAPQPOTC0001 |  | HDPE material Approved suppliers and issue po | 37d | 2026-06-03 | 2026-07-15 | TAENSDTL0001, TAENSDTL0002, TAENPQTL0002, TAENSDTL0002 FF, TAENPQTL0004 |  | 0d |
|  | 3 | **Material Purchase Order for CCTV Networks** |  | 2026-06-29 | 2026-09-08 |  |  |  |
| TAPQPOCC0001 |  | CCTV material Approved suppliers and issue po | 62d | 2026-06-29 | 2026-09-08 | TAENSDCC0001, TAENSDCC0002 FS+141d, TAENPQCC0002 |  | 13d |
|  | 4 | **Material Purchase Order for Potable Networks** |  | 2026-01-03 | 2026-05-24 |  |  |  |
| TAPQPOPT0001 |  | Potable Water material Approved suppliers and issue po | 122d | 2026-01-03 A | 2026-05-24 A | TAENSDPT0001, TAENSDPT0002 FS+60d, TAENPQPT0002, TAENPQPT0004, TAENPQPT0006 | 100% |  |
|  | 5 | **Material Purchase Order for TSE Networks** |  | 2026-01-03 | 2026-05-24 |  |  |  |
| TAPQPOTS0001 |  | TSE material Approved suppliers and issue po | 122d | 2026-01-03 A | 2026-05-24 A | TAENSDTS0001, TAENSDTS0002 FS+58d, TAENPQTS0002, TAENPQTS0004 FF | 100% |  |
|  | 6 | **Material Purchase Order for Sewrage Networks** |  | 2025-11-19 | 2026-01-29 |  |  |  |
| TAPQPOSW0001 |  | Sanitary Sewerage material Approved suppliers and issue po | 62d | 2025-11-19 A | 2026-01-29 A | TAENSDSW0001, TAENSDSW0002 FS+38d, TAENPQSW0002, TAENPQSW0004 | 100% |  |
|  | 7 | **Material Purchase Order for Storm Networks** |  | 2025-12-03 | 2026-05-24 |  |  |  |
| TAPQPOST0001 |  | Storm Water material Approved suppliers and issue po | 148d | 2025-12-03 A | 2026-05-24 A | TAENSDST0001, TAENSDST0002 FS+55d, TAENPQST0002, TAENPQST0004, TAENPQST0006, TAENPQST0008, TAENPQST0010, TAENPQST0012 | 100% |  |
|  | 17 | **Material Fabrication and Delivery** |  | 2025-10-27 | 2027-09-02 |  |  |  |
|  | 1 | **Material Fabrication and Delivery for Road Works** |  | 2025-10-27 | 2027-09-02 |  |  |  |
| TAPQDVRD0007 |  | Backfilling Material Delivery to Site | 107d | 2025-10-27 A | 2026-02-28 A | TAENPQRD0006 | 100% |  |
| TAPQDVRD0002 |  | BBC Base Course Delivery to Site | 6d | 2026-03-29 A | 2026-04-04 A | TAPQPORD0001 | 100% |  |
| TAPQDVRD0004 |  | Precast Concrete Curbstone Delivery to Site | 10d | 2026-04-07 A | 2026-04-18 A | TAPQDVRD0001 FS+30d | 100% |  |
| TAPQDVRD0001 |  | ABC Delivery to Site | 46d | 2026-04-09 A | 2026-06-02 A | TAPQDVRD0007 FS+114d | 100% |  |
| TAPQDVRD0008 |  | Marking for Road delivery to site | 2d | 2026-04-22 A | 2026-04-23 A | TAPQPORD0001, TAPQDVRD0002 | 100% |  |
| TAPQDVRD0009 |  | Trafic Sinage delivery to site | 4d | 2026-04-28 A | 2026-05-02 A | TAPQDVRD0002 | 100% |  |
| TAPQDVRD00011 |  | ABC Delivery to Site Part 01 | 71d | 2026-06-03 | 2026-08-24 | TAPQDVRD0001 |  | 0d |
| TAPQDVRD00041 |  | Precast Concrete Curbstone Delivery to Site part 01 | 60d | 2027-02-28 | 2027-05-08 | TAPQDVRD00011 FS+160d, TAPQDVRD0004 |  | 2d |
| TAPQDVRD00021 |  | BBC Base Course Delivery to Site Part 01 | 74d | 2027-04-19 | 2027-07-13 | TAPQDVRD0002, TAEXRDCC020006, TAEXRDCC030006, TAEXRDCL100006, TAEXRDCA020003, TAEXRDCC010006, TAEXRDC L020006, TAEXRDCL030006, TAEXRDCL040006, TAEXRDCL050006, TAEXRDCL010006, TAEXRDCL060006, TAEXRDCL070006, TAEXRDCL080006, TAEXRDCL090006, TAEXRDCU290003 |  | 0d |
| TAPQDVRD0003 |  | BWC Asphalt Wearing Course Delivery to Site | 35d | 2027-07-14 | 2027-08-23 | TAPQDVRD00021 |  | 1d |
| TAPQDVRD00081 |  | Marking for Road delivery to site Part 01 | 5d | 2027-07-14 | 2027-07-19 | TAPQDVRD0008, TAPQDVRD00021 |  | 0d |
| TAPQDVRD0005 |  | Precast Concrete Interlocking Delivery to Site | 40d | 2027-07-18 | 2027-09-01 | TAPQDVRD00041 FS+60d |  | 2d |
| TAPQDVRD00091 |  | Trafic Sinage delivery to site Part 01 | 9d | 2027-08-24 | 2027-09-02 | TAPQDVRD0009, TAPQDVRD0003 |  | 1d |
|  | 10 | **Material Fabrication and Delivery for Electrical Works** |  | 2026-04-29 | 2027-04-21 |  |  |  |
| TAPQDVEL0001 |  | Pipes ,Fittings Delivery to Site | 1d | 2026-04-29 A | 2026-04-29 A | TAEXELCC030001 SS | 100% |  |
| TAPQDVEL00011 |  | Pipes ,Fittings Delivery to Site Part 01 | 25d | 2026-06-11 | 2026-07-09 | TAPQDVEL0001, TAPQPOEL1 |  | 0d |
| TAPQDVEL0002 |  | cables (LV,MV )Delivery to Site) | 60d | 2026-08-20 | 2026-10-28 | TAPQDVEL00011 FS+35d |  | 0d |

| ID | WBS | Task | Duration | Start | Finish | Predecessors | Complete | Total float |
| --- | --- | --- | --- | --- | --- | --- | --- | --- |
| TAPQDVEL0003 |  | Poles & Luminares Delivery to Site | 60d | 2026-10-29 | 2027-01-06 | TAPQDVEL0002 |  | 0d |
| TAPQDVEL0004 |  | Substations & RMU ,ets.. Delivery to Site | 90d | 2027-01-07 | 2027-04-21 | TAPQDVEL0003 |  | 85d |
| TAPQDVEL0005 |  | Pre cast Drawpits and Pole Foundation Delivery | 40d | 2027-01-14 | 2027-03-01 | TAPQDVEL0003 FF+46d |  | 0d |
|  | 11 | **Material Fabrication and Delivery for Telecommunication** |  | 2026-07-16 | 2026-09-23 |  |  |  |
| TAPQDVTC0001 |  | Telecommunication Material (Pipes,,ets) Delivery | 60d | 2026-07-16 | 2026-09-23 | TAPQPOTC0001, TAPQDVEL00011 |  | 0d |
|  | 12 | **Material Fabrication and Delivery for CCTV Networks** |  | 2026-09-24 | 2026-12-02 |  |  |  |
| TAPQDVCC0001 |  | CCTV Material Cabls,Camera,Devices,ets) Delivery | 60d | 2026-09-24 | 2026-12-02 | TAPQPOCC0001, TAPQDVTC0001 |  | 0d |
|  | 13 | **Material Fabrication and Delivery for Potable Networks** |  | 2026-01-18 | 2026-11-21 |  |  |  |
| TAPQDVPT0001 |  | PE Pipes Delivery | 60d | 2026-01-18 A | 2026-05-03 A | TAPQPOPT0001 | 100% |  |
| TAPQDVPT0002 |  | Valves Delivery to Site | 74d | 2026-02-10 A | 2026-05-06 A | TAPQDVPT0001 | 100% |  |
| TAPQDVPT0003 |  | Fire Hydrent Delivery to Site | 65d | 2026-02-20 A | 2026-05-06 A | TAPQDVPT0002 | 100% |  |
| TAPQDVPT00011 |  | PE Pipes Delivery Part 01 | 30d | 2026-07-13 | 2026-08-16 | TAPQDVPT0001 FS+60d |  | 0d |
| TAPQDVPT00021 |  | Valves Delivery to Site Part 01 | 45d | 2026-08-17 | 2026-10-07 | TAPQDVPT0002, TAPQDVPT00011 |  | 1d |
| TAPQDVPT00031 |  | Fire Hydrent Delivery to Site Part 01 | 38d | 2026-10-08 | 2026-11-21 | TAPQDVPT0003, TAPQDVPT00021 |  | 1d |
|  | 14 | **Material Fabrication and Delivery for TSE Networks** |  | 2026-01-22 | 2027-03-14 |  |  |  |
| TAPQDVTS0001 |  | PE Pipes Delivery to Site | 1d | 2026-01-22 A | 2026-01-22 A | TAPQPOTS0001 | 100% |  |
| TAPQDVTS0002 |  | Valves Delivery to Site | 7d | 2026-02-20 A | 2026-02-28 A | TAPQDVTS0001 | 100% |  |
| TAPQDVTS00011 |  | PE Pipes Delivery to Site Part 01 | 90d | 2026-08-17 | 2026-11-29 | TAPQDVPT00011 |  | 2d |
| TAPQDVTS00021 |  | Valves Delivery to Site Part 01 | 90d | 2026-11-30 | 2027-03-14 | TAPQDVTS0002, TAPQDVTS00011 |  | 77d |
|  | 15 | **Material Fabrication and Delivery for Sewerage Networks** |  | 2025-12-09 | 2026-08-23 |  |  |  |
| TAPQDVSW0001 |  | GRP Pipes Delivery to Site | 63d | 2025-12-09 A | 2026-02-19 A | TAPQPOSW0001 | 100% |  |
| TAPQDVSW0002 |  | Fiberglass Manholes,ets) Delivery | 102d | 2026-01-29 A | 2026-05-27 A | TAPQDVSW0001 FS+15d | 100% |  |
| TAPQDVSW00011 |  | GRP Pipes Delivery to Site Part 01 | 35d | 2026-06-03 | 2026-07-13 | TAPQDVSW0001 |  | 80d |
| TAPQDVSW00021 |  | Fiberglass Manholes,ets) Delivery Part 01 | 35d | 2026-07-14 | 2026-08-23 | TAPQDVSW0002, TAPQDVSW00011 |  | 80d |
|  | 16 | **Material Fabrication and Delivery for Storm Networks** |  | 2025-10-29 | 2027-02-02 |  |  |  |
| TAPQDVST0008 |  | Backfilling Material for Dike Delivery to Site | 130d | 2025-10-29 A | 2026-03-29 A | TAPQDVRD0007 | 100% |  |
| TAPQDVST0002 |  | GRP Pipes with Fittings Delivery Part 1 | 19d | 2025-12-09 A | 2025-12-30 A | TAPQDVST0001 SS+1d | 100% |  |
| TAPQDVST0003 |  | GRP Pipes with Fittings Delivery Part 2 | 39d | 2025-12-31 A | 2026-02-14 A | TAPQDVST0002 | 100% |  |
| TAPQDVST0001 |  | UPVC Pipes with Fittings Delivery | 28d | 2026-01-18 A | 2026-02-19 A | TAPQPOST0001 FF | 100% |  |
| TAPQDVST0006 |  | Manholes,ets Delivery | 100d | 2026-02-07 A | 2026-06-02 A | TAPQDVST0002 FS+20d, TAPQDVST0005 | 100% |  |
| TAPQDVST0004 |  | GRP Pipes with Fittings Delivery Part 3 | 13d | 2026-02-14 A | 2026-02-28 A | TAPQDVST0003 SS+30d | 100% |  |
| TAPQDVST0005 |  | Box Culvert Delivery | 69d | 2026-03-04 A | 2026-05-23 A | TAPQDVST0002 SS+20d | 100% |  |
| TAPQDVST0007 |  | RIprab,Sand,Marl gravel Delivery for Ponds | 1d | 2026-04-22 A | 2026-04-22 A | TAPQDVST0003 FS+60d | 100% |  |
| TAPQDVST0010 |  | Riprab for Dike Delivery to Site | 6d | 2026-04-22 A | 2026-04-28 A | TAEXSTCSWP0013 | 100% |  |
| TAPQDVST00011 |  | UPVC Pipes with Fittings Delivery Part 01 | 10d | 2026-06-03 | 2026-06-14 | TAPQDVST0001 |  | 0d |
| TAPQDVST00101 |  | Riprab for Dike Delivery to Site part 01 | 60d | 2026-06-03 | 2026-08-11 | TAPQDVST0010 |  | 89d |
| TAPQDVST00041 |  | GRP Pipes with Fittings Delivery Part 4 | 60d | 2026-06-15 | 2026-08-23 | TAPQDVST0004, TAPQDVST00011 |  | 0d |
| TAPQDVST0009 |  | Catchbasin Delivery to Site | 60d | 2026-06-15 | 2026-08-23 | TAPQDVST00011 |  | 53d |
| TAPQDVST00051 |  | Box Culvert Delivery part 01 | 31d | 2026-08-24 | 2026-09-28 | TAPQDVST00041 |  | 0d |
| TAPQDVST00061 |  | Manholes,ets Delivery part 01 | 18d | 2026-09-29 | 2026-10-19 | TAPQDVST0006, TAPQDVST00051 |  | 0d |
| TAPQDVST00071 |  | RIprab,Sand,Marl gravel Delivery for Ponds part 01 | 90d | 2026-10-21 | 2027-02-02 | TAPQDVST0007, TAPQDVST00101 FS+60d |  | 89d |
|  | 1 | **CONSTRUCTION WORKS** |  | 2025-09-04 | 2027-09-03 |  |  |  |
|  | 9 | **ZONE 1** |  | 2025-10-21 | 2027-09-03 |  |  |  |
|  | 1 | **Collector Road 02** |  | 2025-11-18 | 2027-06-23 |  |  |  |
|  | 10 | **Road Works** |  | 2025-11-18 | 2027-06-05 |  |  |  |
| TAEXRDCC020001 |  | Road Excavation and Disposal | 38d | 2025-11-18 A | 2025-12-31 A | TAEXRDCL070001 | 100% |  |
| TAEXRDCC020002 |  | Backfilling Works for Road | 8d | 2025-11-20 A | 2025-11-29 A | TAEXRDCC020001 FS+16d | 100% |  |
| TAEXRDCC020003 |  | Subgrade Works | 36d | 2026-01-10 A | 2026-02-19 A | TAEXRDCC020002 | 100% |  |
| TAEXRDCC0200021 |  | Backfilling Works for Road Part 01 | 8d | 2027-03-07 | 2027-03-15 | TAEXELCC020005 |  | 0d |
| TAEXRDCC0200031 |  | Subgrade Works Part 01 | 8d | 2027-03-16 | 2027-03-24 | TAEXRDCC020003, TAEXRDCC0200021 |  | 0d |
| TAEXRDCC020004 |  | ABC aggregate Base Course Works | 16d | 2027-03-25 | 2027-04-12 | TAEXSTCC020006 FS+20d, TAEXRDCC0200031, TAPQDVRD00011 |  | 0d |
| TAEXRDCC020005 |  | MBC1 layer | 1d | 2027-04-13 | 2027-04-13 | TAEXRDCC020004 |  | 0d |
| TAEXRDCC020006 |  | BBC Base Course | 4d | 2027-04-14 | 2027-04-18 | TAEXRDCC020005 |  | 0d |
| TAEXRDCC020008 |  | Precast Concret Kerps | 11d | 2027-04-19 | 2027-05-01 | TAEXRDCC020006, TAEXRDCL050008 |  | 28d |
| TAEXRDCC020007 |  | BWC Asphalt Wearing Course with RC | 2d | 2027-05-02 | 2027-05-03 | TAEXRDCC020006, TAEXRDCC020008 |  | 39d |
| TAEXRDCC020009 |  | Precast Interlock Works | 18d | 2027-05-04 | 2027-05-24 | TAEXRDCC020008, TAEXRDCC020007 |  | 39d |
| TAEXRDCC020010 |  | Stone Paving works | 7d | 2027-05-25 | 2027-06-01 | TAEXRDCC020009 |  | 39d |
| TAEXRDCC020011 |  | Road Marking | 2d | 2027-06-02 | 2027-06-03 | TAEXRDCC020010 |  | 39d |
| TAEXRDCC020012 |  | Traffic Sinage | 1d | 2027-06-05 | 2027-06-05 | TAEXRDCC020011 |  | 39d |
|  | 11 | **Electrical Works** |  | 2026-09-17 | 2027-03-22 |  |  |  |
| TAEXELCC020001 |  | Trench Cut off | 20d | 2026-09-17 | 2026-10-10 | TAEXELCC0300011 |  | 82d |
| TAEXELCC020002 |  | Drawpit and PVC Pipes Installation | 14d | 2027-01-14 | 2027-01-30 | TAEXELCC020001, TAPQDVEL0005 SS, TAPQDVEL00011 |  | 0d |
| TAEXELCC020003 |  | Road Crossing Ducts | 4d | 2027-01-31 | 2027-02-03 | TAEXELCC020002 |  | 0d |
| TAEXELCC020004 |  | Trench Backfilling | 18d | 2027-02-04 | 2027-02-24 | TAEXELCC020003 |  | 0d |
| TAEXELCC020005 |  | Cables Pulling | 8d | 2027-02-25 | 2027-03-06 | TAEXELCC020002, TAEXELCC020003, TAEXELCC020004 |  | 0d |
| TAEXELCC020006 |  | Poles RC Foundation | 6d | 2027-03-02 | 2027-03-08 | TAEXELCC020002, TAPQDVEL0005 |  | 82d |
| TAEXELCC020007 |  | Earthing cables | 10d | 2027-03-09 | 2027-03-20 | TAEXELCC020006 |  | 82d |
| TAEXELCC020008 |  | Lighting Pole Installation with Luminares | 12d | 2027-03-09 | 2027-03-22 | TAEXELCC020006, TAEXELCC020005 |  | 89d |
|  | 12 | **Telecommunication Works** |  | 2026-08-09 | 2027-04-05 |  |  |  |
| TAEXTCCC020001 |  | Trench Cut off | 20d | 2026-08-09 | 2026-08-31 | TAPQDVTC0001 SS+20d |  | 45d |

| ID | WBS | Task | Duration | Start | Finish | Predecessors | Complete | Total float |
| --- | --- | --- | --- | --- | --- | --- | --- | --- |
| TAEXTCCC020002 |  | Drawpit and PVC Pipes Installation | 8d | 2027-03-02 | 2027-03-10 | TAEXTCCC020001, TAPQDVEL00011, TAPQDVEL0005 |  | 0d |
| TAEXTCCC020003 |  | Road Crossing Ducts | 4d | 2027-03-11 | 2027-03-15 | TAEXTCCC020002 |  | 107d |
| TAEXTCCC020004 |  | Trench Backfilling | 18d | 2027-03-16 | 2027-04-05 | TAEXTCCC020003 |  | 107d |
|  | 13 | **CCTV Works** |  | 2027-01-24 | 2027-04-03 |  |  |  |
| TAEXCCCC020001 |  | Pipe Installation with manhole | 10d | 2027-01-24 | 2027-02-03 | TAEXCCCL050001 |  | 0d |
| TAEXCCCC020002 |  | CCTV Swiches Lighting panels Installation | 18d | 2027-02-04 | 2027-02-24 | TAEXCCCC020001 |  | 0d |
| TAEXCCCC020003 |  | Cable laying and connected with Panels | 14d | 2027-02-25 | 2027-03-13 | TAEXCCCC020002 |  | 112d |
| TAEXCCCC020004 |  | Pole Installation with IP Outdoor CCTV POE Camera | 18d | 2027-03-14 | 2027-04-03 | TAEXCCCC020003 |  | 112d |
|  | 14 | **Potable Networks** |  | 2026-12-14 | 2027-06-16 |  |  |  |
| TAEXPTCC020001 |  | Excavation works for Trench | 20d | 2026-12-14 | 2027-01-05 | TAEXPTCL100001, TAEXTSCL100004 |  | 98d |
| TAEXPTCC020002 |  | Bedding Works | 2d | 2027-01-06 | 2027-01-07 | TAEXPTCC020001 |  | 98d |
| TAEXPTCC020003 |  | Install Pipes & Fittings | 16d | 2027-01-09 | 2027-01-26 | TAEXPTCC020002 |  | 98d |
| TAEXPTCC020004 |  | Backfilling Works for Trench | 18d | 2027-01-27 | 2027-02-16 | TAEXPTCC020003 |  | 98d |
| TAEXPTCC020005 |  | Install Valves with fittings | 8d | 2027-05-10 | 2027-05-18 | TAEXPTCC020004 FF, TAPQDVPT00021, TAEXPTCL100005 |  | 20d |
| TAEXPTCC020006 |  | Install fire hydrent | 8d | 2027-05-19 | 2027-05-27 | TAEXPTCC020003, TAEXPTCC020005, TAEXPTCL100006 |  | 20d |
| TAEXPTCC020007 |  | Valve Chamber works | 11d | 2027-05-29 | 2027-06-09 | TAEXPTCC020006 |  | 20d |
| TAEXPTCC020008 |  | Inspection Test | 6d | 2027-06-10 | 2027-06-16 | TAEXPTCC020007 |  | 36d |
|  | 15 | **TSE Networks** |  | 2026-04-19 | 2027-06-23 |  |  |  |
| TAEXTSCC020001 |  | Excavation works for Trench | 39d | 2026-04-19 A | 2026-06-02 A | TAEXTSCL090001 | 100% |  |
| TAEXTSCC020002 |  | Bedding Works | 2d | 2026-05-07 A | 2026-05-09 A | TAEXTSCC020001 | 100% |  |
| TAEXTSCC020003 |  | Install Pipes & Fittings | 4d | 2026-05-07 A | 2026-05-11 A | TAEXTSCC020002 | 100% |  |
| TAEXTSCC0200021 |  | Bedding Works Part 01 | 2d | 2026-12-29 | 2026-12-30 | TAEXSTCL090007 |  | 134d |
| TAEXTSCC0200031 |  | Install Pipes & Fittings Part 01 | 8d | 2026-12-31 | 2027-01-09 | TAEXTSCC020003, TAEXTSCC0200021 |  | 134d |
| TAEXTSCC020004 |  | Backfilling Works for Trench | 18d | 2027-01-10 | 2027-01-30 | TAEXTSCC0200031 |  | 134d |
| TAEXTSCC020005 |  | Install Valves with fittings | 8d | 2027-01-21 | 2027-01-30 | TAEXTSCC020004 FF |  | 134d |
| TAEXTSCC020006 |  | Valve Chamber works | 20d | 2027-01-31 | 2027-02-22 | TAEXTSCC020005 |  | 134d |
| TAEXTSCC020007 |  | Inspection Test | 6d | 2027-06-17 | 2027-06-23 | TAEXTSCC020006, TAEXPTCC020008 |  | 36d |
|  | 16 | **Sewerage Networks** |  | 2025-11-22 | 2027-03-22 |  |  |  |
| TAEXSWCC020001 |  | Excavation works for Trench | 8d | 2025-11-22 A | 2025-11-30 A | TAPQDVSW0001, TAGNML0011 SS | 100% |  |
| TAEXSWCC020002 |  | Bedding Works | 4d | 2025-12-15 A | 2025-12-18 A | TAEXSWCC020001 | 100% |  |
| TAEXSWCC020003 |  | Install GRP Pipes & Fittings | 12d | 2025-12-20 A | 2026-01-01 A | TAEXSWCC020002 | 100% |  |
| TAEXSWCC020004 |  | Backfilling Works for Trench | 18d | 2025-12-30 A | 2026-01-19 A | TAEXSWCC020003 | 100% |  |
| TAEXSWCC020005 |  | Manhole Installation with backfilling | 16d | 2026-03-30 A | 2026-04-16 A | TAPQDVSW0002 | 100% |  |
| TAEXSWCC020006 |  | Leakage Test | 5d | 2026-04-18 A | 2026-04-22 A | TAEXSWCC020005 | 100% |  |
| TAEXSWCC0200011 |  | Excavation works for Trench Part 01 | 5d | 2026-11-30 | 2026-12-05 | TAPQDVSW00011, TAPQDVTS00011, TAPQDVST00041 |  | 2d |
| TAEXSWCC0200021 |  | Bedding Works Part 01 | 2d | 2026-12-06 | 2026-12-07 | TAEXSWCC020002, TAEXSWCC0200011 |  | 24d |
| TAEXSWCC0200031 |  | Install GRP Pipes & Fittings Part 01 | 4d | 2027-02-08 | 2027-02-11 | TAEXSWCC020003, TAEXSWCC0200021, TAEXSTCC020006 |  | 77d |
| TAEXSWCC0200041 |  | Backfilling Works for Trench Part 01 | 6d | 2027-02-23 | 2027-03-01 | TAEXSWCC0200031 FF+15d, TAEXSWCC020004 |  | 77d |
| TAEXSWCC0200051 |  | Manhole Installation with backfilling Part 01 | 5d | 2027-03-14 | 2027-03-18 | TAEXSWCC0200041 FF+15d, TAEXSWCC020005 |  | 77d |
| TAEXSWCC0200061 |  | Leakage Test Part 01 | 3d | 2027-03-20 | 2027-03-22 | TAEXSWCC020006, TAEXSWCC0200051 |  | 77d |
|  | 17 | **Storm Networks** |  | 2025-11-29 | 2027-03-25 |  |  |  |
| TAEXSTCC020001 |  | Excavation works for Trench | 15d | 2025-11-29 A | 2025-12-15 A | TAPQDVST0002 SS | 100% |  |
| TAEXSTCC020002 |  | Bedding Works | 4d | 2025-12-16 A | 2025-12-20 A | TAEXSTCC020001 | 100% |  |
| TAEXSTCC020003 |  | Install GRP Pipes & Fittings | 12d | 2025-12-21 A | 2026-01-03 A | TAEXSTCC020002 | 100% |  |
| TAEXSTCC020004 |  | Backfilling Works for Trench | 18d | 2025-12-31 A | 2026-01-20 A | TAEXSTCC020003 FS+15d | 100% |  |
| TAEXSTCC020005 |  | Manhole Installation with backfilling | 16d | 2026-03-02 A | 2026-03-19 A | TAEXSTCC020003 | 100% |  |
| TAEXSTCC020007 |  | Leakage Test | 5d | 2026-04-18 A | 2026-04-22 A | TAEXSTCC020005 | 100% |  |
| TAEXSTCC0200041 |  | Backfilling Works for Trench Part 01 | 5d | 2026-12-08 | 2026-12-13 | TAEXSTCC020004, TAEXSWCC0200021 |  | 24d |
| TAEXSTCC0200051 |  | Manhole Installation with backfilling Part 01 | 6d | 2026-12-19 | 2026-12-24 | TAEXSTCC0200041 FF+10d, TAEXSTCC020005, TAPQDVST00061 |  | 24d |
| TAEXSTCC020006 |  | Install Catch Basin with UPVC Pipes & Fittings | 15d | 2027-01-21 | 2027-02-07 | TAEXSTCC0200051, TAEXSTCL100006 |  | 1d |
| TAEXSTCC0200071 |  | Leakage Test Part 01 | 3d | 2027-03-23 | 2027-03-25 | TAEXSTCC020007, TAEXSTCC020006, TAEXSWCC0200061 |  | 77d |
|  | 2 | **Collector Road 03** |  | 2026-01-18 | 2027-05-31 |  |  |  |
|  | 10 | **Road Works** |  | 2026-01-18 | 2027-05-24 |  |  |  |
| TAEXRDCC030003 |  | Subgrade Works | 14d | 2026-01-18 A | 2026-02-02 A | TAEXRDCC030002 FS+25d, TAGNZM0001 SS | 100% |  |
| TAEXRDCC030001 |  | Road Excavation and Disposal | 14d | 2026-03-24 A | 2026-04-08 A | TAEXRDCC020001, TAGNML0004 SS, TAENSDRD0001 | 100% |  |
| TAEXRDCC030002 |  | Backfilling Works for Road | 18d | 2026-04-09 A | 2026-04-29 A | TAEXRDCC030001 | 100% |  |
| TAEXRDCC030004 |  | ABC aggregate Base Course Works | 1d | 2026-05-21 A | 2026-05-21 A | TAEXRDCC030003, TAEXSTCC030006 | 100% |  |
| TAEXRDCC0300041 |  | ABC aggregate Base Course Works Part 01 | 5d | 2026-08-25 | 2026-08-30 | TAEXRDCC030004, TAPQDVRD00011 |  | 0d |
| TAEXRDCC030005 |  | MBC1 layer | 1d | 2026-08-31 | 2026-08-31 | TAEXRDCC0300041 |  | 0d |
| TAEXRDCC030006 |  | BBC Base Course | 4d | 2026-09-01 | 2026-09-05 | TAEXRDCC030005 |  | 0d |
| TAEXRDCC030008 |  | Precast Concret Kerps | 7d | 2027-05-02 | 2027-05-09 | TAEXRDCC030006, TAEXRDCC020008 |  | 28d |
| TAEXRDCC030007 |  | BWC Asphalt Wearing Course with RC | 2d | 2027-05-10 | 2027-05-11 | TAEXRDCC030006, TAEXRDCC030008 |  | 41d |
| TAEXRDCC030009 |  | Precast Interlock Works | 6d | 2027-05-12 | 2027-05-18 | TAEXRDCC030008, TAEXRDCC030007 |  | 49d |
| TAEXRDCC030010 |  | Stone Paving works | 2d | 2027-05-19 | 2027-05-20 | TAEXRDCC030009 |  | 49d |
| TAEXRDCC030011 |  | Road Marking | 1d | 2027-05-22 | 2027-05-22 | TAEXRDCC030010 |  | 49d |
| TAEXRDCC030012 |  | Traffic Sinage | 2d | 2027-05-23 | 2027-05-24 | TAEXRDCC030011 |  | 49d |
|  | 1 | **Electrical Works** |  | 2026-05-10 | 2027-05-31 |  |  |  |
| TAEXELCC030001 |  | Trench Cut off | 1d | 2026-05-10 A | 2026-05-10 A | TAENSDEL0002, TAGNML0005 SS | 100% |  |
| TAEXELCC030002 |  | Drawpit and PVC Pipes Installation | 2d | 2026-05-11 A | 2026-05-12 A | TAEXELCC030001 | 100% |  |
| TAEXELCC030003 |  | Road Crossing Ducts | 2d | 2026-05-11 A | 2026-05-12 A | TAEXELCC030002 | 100% |  |

| ID | WBS | Task | Duration | Start | Finish | Predecessors | Complete | Total float |
| --- | --- | --- | --- | --- | --- | --- | --- | --- |
| TAEXELCC030004 |  | Trench Backfilling | 1d | 2026-05-12 A | 2026-05-12 A | TAEXELCC030003 | 100% |  |
| TAEXELCC0300011 |  | Trench Cut off Part 01 | 10d | 2026-09-06 | 2026-09-16 | TAEXRDCC030006 |  | 0d |
| TAEXELCC030005 |  | Cables Pulling | 4d | 2027-05-10 | 2027-05-13 | TAEXELCC030002, TAEXELCC030003, TAEXRDCC030008 |  | 28d |
| TAEXELCC0300041 |  | Trench Backfilling Part 01 | 4d | 2027-05-15 | 2027-05-18 | TAEXELCC030004, TAEXELCC030005 |  | 28d |
| TAEXELCC030006 |  | Poles RC Foundation | 3d | 2027-05-19 | 2027-05-22 | TAEXELCC030002, TAPQDVEL0005, TAEXELCC0300041 |  | 28d |
| TAEXELCC030007 |  | Earthing cables | 2d | 2027-05-23 | 2027-05-24 | TAEXELCC030006, TAEXELCC020007 |  | 28d |
| TAEXELCC030008 |  | Lighting Pole Installation with Luminares | 8d | 2027-05-23 | 2027-05-31 | TAEXELCC030006, TAEXELCC030005 |  | 59d |
|  | 2 | **Telecommunication Works** |  | 2026-09-24 | 2027-04-04 |  |  |  |
| TAEXTCCC030001 |  | Trench Cut off | 10d | 2026-09-24 | 2026-10-05 | TAEXTCCC020001 FS+20d, TAGNML0006 SS |  | 45d |
| TAEXTCCC030002 |  | Drawpit and PVC Pipes Installation | 7d | 2027-03-11 | 2027-03-18 | TAEXTCCC030001, TAEXTCCC020002 |  | 0d |
| TAEXTCCC030003 |  | Road Crossing Ducts | 2d | 2027-03-20 | 2027-03-21 | TAEXTCCC030002 |  | 108d |
| TAEXTCCC030004 |  | Trench Backfilling | 12d | 2027-03-22 | 2027-04-04 | TAEXTCCC030003 |  | 108d |
|  | 3 | **CCTV Works** |  | 2026-09-24 | 2027-03-31 |  |  |  |
| TAEXCCCC030001 |  | Pipe Installation with manhole | 7d | 2026-09-24 | 2026-10-01 | TAPQDVCC0001 SS, TAGNML0008 SS |  | 0d |
| TAEXCCCC030002 |  | CCTV Swiches Lighting panels Installation | 12d | 2027-02-25 | 2027-03-10 | TAEXCCCC030001, TAEXCCCC020002 |  | 0d |
| TAEXCCCC030003 |  | Cable laying and connected with Panels | 8d | 2027-03-11 | 2027-03-20 | TAEXCCCC030002 |  | 114d |
| TAEXCCCC030004 |  | Pole Installation with IP Outdoor CCTV POE Camera | 10d | 2027-03-21 | 2027-03-31 | TAEXCCCC030003 |  | 114d |
|  | 4 | **Potable Networks** |  | 2026-03-31 | 2026-05-16 |  |  |  |
| TAEXPTCC030001 |  | Excavation works for Trench | 40d | 2026-03-31 A | 2026-05-16 A | TAEXPTCL020001, TAGNML0009 SS | 100% |  |
| TAEXPTCC030002 |  | Bedding Works | 24d | 2026-04-18 A | 2026-05-16 A | TAEXPTCC030001 | 100% |  |
| TAEXPTCC030003 |  | Install Pipes & Fittings | 23d | 2026-04-19 A | 2026-05-16 A | TAEXPTCC030002 | 100% |  |
| TAEXPTCC030004 |  | Backfilling Works for Trench | 22d | 2026-04-21 A | 2026-05-16 A | TAEXPTCC030003 | 100% |  |
| TAEXPTCC030006 |  | Install fire hydrent | 5d | 2026-05-05 A | 2026-05-10 A | TAEXPTCC030003 | 100% |  |
| TAEXPTCC030005 |  | Install Valves with fittings | 2d | 2026-05-09 A | 2026-05-10 A | TAEXPTCC030004 FF, TAPQDVPT0002 | 100% |  |
| TAEXPTCC030007 |  | Inspection Test | 3d | 2026-05-13 A | 2026-05-16 A | TAEXPTCC030006 | 100% |  |
|  | 5 | **TSE Networks** |  | 2026-04-26 | 2026-05-16 |  |  |  |
| TAEXTSCC030001 |  | Excavation works for Trench | 18d | 2026-04-26 A | 2026-05-16 A | TAPQDVTS0001, TAGNML0010 SS | 100% |  |
| TAEXTSCC030002 |  | Bedding Works | 12d | 2026-05-03 A | 2026-05-16 A | TAEXTSCC030001 | 100% |  |
| TAEXTSCC030003 |  | Install Pipes & Fittings | 10d | 2026-05-05 A | 2026-05-16 A | TAEXTSCC030002 | 100% |  |
| TAEXTSCC030004 |  | Backfilling Works for Trench | 10d | 2026-05-05 A | 2026-05-16 A | TAEXTSCC030003 | 100% |  |
| TAEXTSCC030005 |  | Inspection Test | 4d | 2026-05-12 A | 2026-05-16 A | TAEXTSCC030004 | 100% |  |
|  | 7 | **Storm Networks** |  | 2026-02-17 | 2026-05-14 |  |  |  |
| TAEXSTCC030001 |  | Excavation works for Trench | 11d | 2026-02-17 A | 2026-03-01 A | TAEXSTCC020001 FS+20d | 100% |  |
| TAEXSTCC030002 |  | Bedding Works | 2d | 2026-03-12 A | 2026-03-14 A | TAEXSTCC030001 | 100% |  |
| TAEXSTCC030003 |  | Install GRP Pipes & Fittings | 37d | 2026-03-14 A | 2026-04-25 A | TAEXSTCC030002 | 100% |  |
| TAEXSTCC030004 |  | Backfilling Works for Trench | 40d | 2026-03-28 A | 2026-05-12 A | TAEXSTCC030003 FS+15d | 100% |  |
| TAEXSTCC030005 |  | Manhole Installation with backfilling | 27d | 2026-04-12 A | 2026-05-12 A | TAEXSTCC030004 FF+10d, TAEXSTCC030003, TAPQDVST0006 | 100% |  |
| TAEXSTCC030006 |  | Install Catch Basin with UPVC Pipes & Fittings | 9d | 2026-05-05 A | 2026-05-14 A | TAEXSTCC030005 | 100% |  |
| TAEXSTCC030007 |  | Leakage Test | 6d | 2026-05-06 A | 2026-05-12 A | TAEXSTCC030005, TAEXSTCC030006 | 100% |  |
|  | 8 | **Upgrade local 21** |  | 2026-03-12 | 2027-06-08 |  |  |  |
|  | 22 | **Road Works** |  | 2027-05-10 | 2027-06-08 |  |  |  |
| TAEXRDCU210002 |  | Precast Concret Kerps | 9d | 2027-05-10 | 2027-05-19 | TAEXRDCC030008 |  | 36d |
| TAEXRDCU210001 |  | BWC Asphalt Wearing Course with RC | 1d | 2027-05-20 | 2027-05-20 | TAEXRDCU210002 |  | 36d |
| TAEXRDCU210003 |  | Precast Interlock Works | 7d | 2027-05-22 | 2027-05-29 | TAEXRDCU210002, TAEXRDCU210001 |  | 36d |
| TAEXRDCU210004 |  | Stone Paving works | 5d | 2027-05-30 | 2027-06-03 | TAEXRDCU210003 |  | 36d |
| TAEXRDCU210005 |  | Road Marking | 1d | 2027-06-05 | 2027-06-05 | TAEXRDCU210004 |  | 36d |
| TAEXRDCU210006 |  | Traffic Sinage | 3d | 2027-06-06 | 2027-06-08 | TAEXRDCU210005 |  | 36d |
|  | 13 | **Electrical Works** |  | 2026-09-17 | 2027-05-29 |  |  |  |
| TAEXELCU210001 |  | Trench Cut off | 13d | 2026-09-17 | 2026-10-01 | TAEXELCC0300011 |  | 0d |
| TAEXELCU210002 |  | Drawpit and PVC Pipes Installation | 12d | 2027-03-16 | 2027-03-29 | TAEXELCU210001, TAPQDVEL0005 FS+12d |  | 46d |
| TAEXELCU210003 |  | Road Crossing Ducts | 6d | 2027-03-30 | 2027-04-05 | TAEXELCU210002 |  | 46d |
| TAEXELCU210006 |  | Poles RC Foundation | 8d | 2027-03-30 | 2027-04-07 | TAEXELCU210002, TAPQDVEL0005 |  | 68d |
| TAEXELCU210004 |  | Trench Backfilling | 18d | 2027-04-06 | 2027-04-26 | TAEXELCU210003 |  | 46d |
| TAEXELCU210008 |  | Lighting Pole Installation with Luminares | 10d | 2027-04-08 | 2027-04-19 | TAEXELCU210006 |  | 95d |
| TAEXELCU210005 |  | Cables Pulling | 6d | 2027-04-27 | 2027-05-03 | TAEXELCU210002, TAEXELCU210003, TAEXELCU210004 |  | 46d |
| TAEXELCU210009 |  | Install Substation & RMU | 9d | 2027-05-04 | 2027-05-13 | TAEXELCU210005, TAPQDVEL0004 |  | 75d |
| TAEXELCU210007 |  | Earthing cables | 4d | 2027-05-25 | 2027-05-29 | TAEXELCU210006, TAEXELCU210005, TAEXELCC030007 |  | 28d |
|  | 1 | **Telecommunication Works** |  | 2026-10-29 | 2027-04-29 |  |  |  |
| TAEXTCCU210001 |  | Trench Cut off | 14d | 2026-10-29 | 2026-11-14 | TAEXTCCC030001 FS+20d |  | 45d |
| TAEXTCCU210002 |  | Drawpit and PVC Pipes Installation | 12d | 2027-03-20 | 2027-04-01 | TAEXTCCU210001, TAEXTCCC030002 |  | 0d |
| TAEXTCCU210003 |  | Road Crossing Ducts | 6d | 2027-04-03 | 2027-04-08 | TAEXTCCU210002 |  | 86d |
| TAEXTCCU210004 |  | Trench Backfilling | 18d | 2027-04-10 | 2027-04-29 | TAEXTCCU210003 |  | 86d |
|  | 10 | **CCTV Works** |  | 2026-10-03 | 2027-04-28 |  |  |  |
| TAEXCCCU210001 |  | Pipe Installation with manhole | 14d | 2026-10-03 | 2026-10-18 | TAEXCCCC030001 |  | 0d |
| TAEXCCCU210002 |  | CCTV Swiches Lighting panels Installation | 16d | 2027-03-11 | 2027-03-29 | TAEXCCCU210001, TAEXCCCC030002 |  | 0d |
| TAEXCCCU210003 |  | Cable laying and connected with Panels | 12d | 2027-03-30 | 2027-04-12 | TAEXCCCU210002 |  | 90d |
| TAEXCCCU210004 |  | Pole Installation with IP Outdoor CCTV POE Camera | 14d | 2027-04-13 | 2027-04-28 | TAEXCCCU210003 |  | 90d |
|  | 2 | **Potable Networks** |  | 2026-12-06 | 2027-03-10 |  |  |  |
| TAEXPTCU210001 |  | Excavation works for Trench | 20d | 2026-12-06 | 2026-12-28 | TAEXPTCU280001 |  | 1d |
| TAEXPTCU210002 |  | Bedding Works | 2d | 2026-12-29 | 2026-12-30 | TAEXPTCU210001, TAEXTSCU210002 |  | 126d |

| ID | WBS | Task | Duration | Start | Finish | Predecessors | Complete | Total float |
| --- | --- | --- | --- | --- | --- | --- | --- | --- |
| TAEXPTCU210003 |  | Install Pipes & Fittings | 15d | 2026-12-31 | 2027-01-17 | TAEXPTCU210002, TAEXPTCC030003, TAEXTSCU210003 |  | 126d |
| TAEXPTCU210004 |  | Backfilling Works for Trench | 16d | 2027-01-18 | 2027-02-04 | TAEXPTCU210003, TAEXTSCU210004 |  | 126d |
| TAEXPTCU210005 |  | Install Valves with fittings | 8d | 2027-01-27 | 2027-02-04 | TAEXPTCU210004 FF, TAPQDVPT00021 |  | 126d |
| TAEXPTCU210006 |  | Install fire hydrent | 8d | 2027-02-06 | 2027-02-14 | TAEXPTCU210003, TAEXPTCU210005 |  | 126d |
| TAEXPTCU210007 |  | Valve Chamber works | 16d | 2027-02-15 | 2027-03-04 | TAEXPTCU210006, TAEXTSCU210006 |  | 126d |
| TAEXPTCU210008 |  | Inspection Test | 5d | 2027-03-06 | 2027-03-10 | TAEXPTCU210007, TAEXTSCU210007 |  | 126d |
|  | 3 | **TSE Networks** |  | 2026-10-27 | 2027-01-31 |  |  |  |
| TAEXTSCU210001 |  | Excavation works for Trench | 29d | 2026-10-27 | 2026-11-29 | TAEXTSCU280001 |  | 54d |
| TAEXTSCU210002 |  | Bedding Works | 2d | 2026-11-30 | 2026-12-01 | TAEXTSCU210001 |  | 135d |
| TAEXTSCU210003 |  | Install Pipes & Fittings | 15d | 2026-12-02 | 2026-12-19 | TAEXTSCU210002, TAEXTSCC030003 |  | 135d |
| TAEXTSCU210004 |  | Backfilling Works for Trench | 16d | 2026-12-20 | 2027-01-06 | TAEXTSCU210003 |  | 135d |
| TAEXTSCU210005 |  | Install Valves with fittings | 8d | 2026-12-29 | 2027-01-06 | TAEXTSCU210004 FF |  | 143d |
| TAEXTSCU210006 |  | Valve Chamber works | 16d | 2027-01-07 | 2027-01-25 | TAEXTSCU210005 |  | 143d |
| TAEXTSCU210007 |  | Inspection Test | 5d | 2027-01-26 | 2027-01-31 | TAEXTSCU210006 |  | 154d |
|  | 4 | **Sewerage Networks** |  | 2027-02-21 | 2027-05-09 |  |  |  |
| TAEXSWCU210001 |  | Excavation works for Trench | 24d | 2027-02-21 | 2027-03-20 | TAEXSWCL0100011 |  | 2d |
| TAEXSWCU210002 |  | Bedding Works | 3d | 2027-03-21 | 2027-03-23 | TAEXSWCU210001 |  | 75d |
| TAEXSWCU210003 |  | Install GRP Pipes & Fittings | 11d | 2027-03-24 | 2027-04-05 | TAEXSWCU210002 |  | 75d |
| TAEXSWCU210004 |  | Backfilling Works for Trench | 16d | 2027-04-05 | 2027-04-22 | TAEXSWCU210003 FF+15d |  | 75d |
| TAEXSWCU210005 |  | Manhole Installation with backfilling | 15d | 2027-04-18 | 2027-05-04 | TAEXSWCU210004 FF+10d, TAEXSWCU210003, TAPQDVSW00021 |  | 75d |
| TAEXSWCU210006 |  | Leakage Test | 4d | 2027-05-05 | 2027-05-09 | TAEXSWCU210005 |  | 75d |
|  | 5 | **Storm Networks** |  | 2026-03-12 | 2027-03-30 |  |  |  |
| TAEXSTCU210005 |  | Manhole Installation with backfilling | 36d | 2026-03-12 A | 2026-04-22 A | TAEXSTCU210004 FF+10d, TAEXSTCU210003 | 100% |  |
| TAEXSTCU210001 |  | Excavation works for Trench | 42d | 2026-03-25 A | 2026-05-12 A | TAEXSTCL040001 | 100% |  |
| TAEXSTCU210002 |  | Bedding Works | 2d | 2026-04-09 A | 2026-04-11 A | TAEXSTCU210001 | 100% |  |
| TAEXSTCU210003 |  | Install GRP Pipes & Fittings | 6d | 2026-04-09 A | 2026-04-15 A | TAEXSTCU210002 | 100% |  |
| TAEXSTCU210004 |  | Backfilling Works for Trench | 9d | 2026-04-15 A | 2026-04-25 A | TAEXSTCU210003 | 100% |  |
| TAEXSTCU2100021 |  | Bedding Works Part 01 | 1d | 2026-09-20 | 2026-09-20 | TAEXSTCL0400021 |  | 54d |
| TAEXSTCU2100031 |  | Install GRP Pipes & Fittings Part 01 | 3d | 2026-09-21 | 2026-09-23 | TAEXSTCU210003, TAEXSTCU2100021 |  | 54d |
| TAEXSTCU2100041 |  | Backfilling Works for Trench Part 01 | 5d | 2026-10-06 | 2026-10-11 | TAEXSTCU2100031 FF+15d |  | 54d |
| TAEXSTCU2100051 |  | Manhole Installation with backfilling Part 01 | 5d | 2026-10-20 | 2026-10-25 | TAEXSTCU2100041 FF+10d, TAEXSTCU210005, TAPQDVST00061 |  | 52d |
| TAEXSTCU210006 |  | Install Catch Basin with UPVC Pipes & Fittings | 14d | 2026-12-26 | 2027-01-10 | TAEXSTCL090006, TAEXSTCU2100051 |  | 0d |
| TAEXSTCU210007 |  | Leakage Test | 4d | 2027-03-27 | 2027-03-30 | TAEXSTCU210006, TAEXSTCU2100051, TAEXSTCC0200071 |  | 77d |
|  | 6 | **Upgrade local 26** |  | 2026-10-03 | 2027-09-03 |  |  |  |
|  | 14 | **Electrical Works** |  | 2026-10-03 | 2027-09-03 |  |  |  |
| TAEXELCU260001 |  | Trench Cut off | 14d | 2026-10-03 | 2026-10-18 | TAEXELCU210001 |  | 0d |
| TAEXELCU260002 |  | Drawpit and PVC Pipes Installation | 12d | 2027-03-02 | 2027-03-15 | TAEXELCU260001, TAPQDVEL0005 |  | 111d |
| TAEXELCU260003 |  | Road Crossing Ducts | 4d | 2027-03-16 | 2027-03-20 | TAEXELCU260002 |  | 123d |
| TAEXELCU260006 |  | Poles RC Foundation | 6d | 2027-03-16 | 2027-03-22 | TAEXELCU260002, TAPQDVEL0005 |  | 111d |
| TAEXELCU260004 |  | Trench Backfilling | 13d | 2027-03-21 | 2027-04-04 | TAEXELCU260003 |  | 123d |
| TAEXELCU260008 |  | Lighting Pole Installation with Luminares | 8d | 2027-03-23 | 2027-03-31 | TAEXELCU260006 |  | 111d |
| TAEXELCU260005 |  | Cables Pulling | 4d | 2027-04-05 | 2027-04-08 | TAEXELCU260002, TAEXELCU260003, TAEXELCU260004 |  | 123d |
| TAEXELCU260007 |  | Earthing cables | 4d | 2027-08-31 | 2027-09-03 | TAEXELCU260006, TAEXELCU260005, TAEXELCU330007 |  | 0d |
|  | 10 | **CCTV Works** |  | 2026-10-19 | 2027-05-03 |  |  |  |
| TAEXCCCU260001 |  | Pipe Installation with manhole | 10d | 2026-10-19 | 2026-10-29 | TAEXCCCU210001 |  | 0d |
| TAEXCCCU260002 |  | CCTV Swiches Lighting panels Installation | 12d | 2027-03-30 | 2027-04-12 | TAEXCCCU260001, TAEXCCCU210002 |  | 0d |
| TAEXCCCU260003 |  | Cable laying and connected with Panels | 8d | 2027-04-13 | 2027-04-21 | TAEXCCCU260002 |  | 86d |
| TAEXCCCU260004 |  | Pole Installation with IP Outdoor CCTV POE Camera | 10d | 2027-04-22 | 2027-05-03 | TAEXCCCU260003 |  | 86d |
|  | 3 | **Local Road 10** |  | 2025-10-21 | 2027-06-10 |  |  |  |
|  | 12 | **Road Works** |  | 2025-10-21 | 2027-05-23 |  |  |  |
| TAEXRDCL100001 |  | Road Excavation and Disposal | 19d | 2025-10-21 A | 2025-11-11 A | TAEXRDCL090001 | 100% |  |
| TAEXRDCL100002 |  | Backfilling Works for Road | 10d | 2025-11-13 A | 2025-11-24 A | TAEXRDCL100001 | 100% |  |
| TAEXRDCL100003 |  | Subgrade Works | 4d | 2027-01-16 | 2027-01-19 | TAEXRDCL100002, TAEXRDCL0100031 |  | 1d |
| TAEXRDCL100004 |  | ABC aggregate Base Course Works | 4d | 2027-01-21 | 2027-01-25 | TAEXRDCL100003, TAEXSTCL100006, TAPQDVRD00011 FS+17d |  | 0d |
| TAEXRDCL100005 |  | MBC1 layer | 1d | 2027-01-26 | 2027-01-26 | TAEXRDCL100004 |  | 0d |
| TAEXRDCL100006 |  | BBC Base Course | 2d | 2027-01-27 | 2027-01-28 | TAEXRDCL100005 |  | 0d |
| TAEXRDCL100008 |  | Precast Concret Kerps | 14d | 2027-01-30 | 2027-02-14 | TAEXRDCL100006 |  | 0d |
| TAEXRDCL100007 |  | BWC Asphalt Wearing Course with RC | 1d | 2027-05-03 | 2027-05-03 | TAEXRDCL100006, TAEXRDCL100008, TAEXRDCL010007 |  | 50d |
| TAEXRDCL100009 |  | Precast Interlock Works | 13d | 2027-05-04 | 2027-05-18 | TAEXRDCL100008, TAEXRDCL100007 |  | 50d |
| TAEXRDCL100010 |  | Stone Paving works | 2d | 2027-05-19 | 2027-05-20 | TAEXRDCL100009 |  | 50d |
| TAEXRDCL100011 |  | Road Marking | 1d | 2027-05-22 | 2027-05-22 | TAEXRDCL100010 |  | 50d |
| TAEXRDCL100012 |  | Traffic Sinage | 1d | 2027-05-23 | 2027-05-23 | TAEXRDCL100011 |  | 50d |
|  | 25 | **Electrical Works** |  | 2026-10-19 | 2027-05-31 |  |  |  |
| TAEXELCL100001 |  | Trench Cut off | 12d | 2026-10-19 | 2026-11-01 | TAEXELCU260001, TAEXELCU260001 FF |  | 0d |
| TAEXELCL100002 |  | Drawpit and PVC Pipes Installation | 10d | 2027-03-02 | 2027-03-13 | TAEXELCL100001, TAPQDVEL0005 |  | 80d |
| TAEXELCL100003 |  | Road Crossing Ducts | 2d | 2027-03-14 | 2027-03-15 | TAEXELCL100002 |  | 80d |
| TAEXELCL100006 |  | Poles RC Foundation | 3d | 2027-03-14 | 2027-03-16 | TAEXELCL100002, TAPQDVEL0005 |  | 91d |
| TAEXELCL100004 |  | Trench Backfilling | 10d | 2027-03-16 | 2027-03-27 | TAEXELCL100003 |  | 80d |
| TAEXELCL100008 |  | Lighting Pole Installation with Luminares | 4d | 2027-03-17 | 2027-03-21 | TAEXELCL100006 |  | 120d |
| TAEXELCL100005 |  | Cables Pulling | 2d | 2027-03-28 | 2027-03-29 | TAEXELCL100002, TAEXELCL100003, TAEXELCL100004 |  | 80d |

| ID | WBS | Task | Duration | Start | Finish | Predecessors | Complete | Total float |
| --- | --- | --- | --- | --- | --- | --- | --- | --- |
| TAEXELCL100009 |  | Install Substation & RMU | 9d | 2027-04-22 | 2027-05-02 | TAEXELCL100005, TAPQDVEL0004 |  | 85d |
| TAEXELCL100007 |  | Earthing cables | 2d | 2027-05-30 | 2027-05-31 | TAEXELCL100006, TAEXELCL100005, TAEXELCU210007 |  | 28d |
|  | 14 | **Telecommunication Works** |  | 2026-11-22 | 2027-04-20 |  |  |  |
| TAEXTCCL100001 |  | Trench Cut off | 5d | 2026-11-22 | 2026-11-26 | TAEXTCCU210001 FS+6d |  | 45d |
| TAEXTCCL100002 |  | Drawpit and PVC Pipes Installation | 4d | 2027-04-03 | 2027-04-06 | TAEXTCCL100001, TAEXTCCU210002 |  | 0d |
| TAEXTCCL100003 |  | Road Crossing Ducts | 2d | 2027-04-07 | 2027-04-08 | TAEXTCCL100002 |  | 94d |
| TAEXTCCL100004 |  | Trench Backfilling | 10d | 2027-04-10 | 2027-04-20 | TAEXTCCL100003 |  | 94d |
|  | 10 | **CCTV Works** |  | 2026-10-31 | 2027-05-11 |  |  |  |
| TAEXCCCL100001 |  | Pipe Installation with manhole | 8d | 2026-10-31 | 2026-11-08 | TAEXCCCU260001 |  | 0d |
| TAEXCCCL100002 |  | CCTV Swiches Lighting panels Installation | 10d | 2027-04-13 | 2027-04-24 | TAEXCCCL100001, TAEXCCCU260002 |  | 0d |
| TAEXCCCL100003 |  | Cable laying and connected with Panels | 6d | 2027-04-25 | 2027-05-01 | TAEXCCCL100002 |  | 79d |
| TAEXCCCL100004 |  | Pole Installation with IP Outdoor CCTV POE Camera | 9d | 2027-05-02 | 2027-05-11 | TAEXCCCL100003 |  | 79d |
|  | 1 | **Potable Networks** |  | 2026-10-26 | 2027-05-30 |  |  |  |
| TAEXPTCL100001 |  | Excavation works for Trench | 8d | 2026-10-26 | 2026-11-03 | TAEXPTCL080001 |  | 1d |
| TAEXPTCL100002 |  | Bedding Works | 2d | 2026-11-04 | 2026-11-05 | TAEXPTCL100001 |  | 98d |
| TAEXPTCL100003 |  | Install Pipes & Fittings | 8d | 2026-11-07 | 2026-11-15 | TAEXPTCL100002 |  | 98d |
| TAEXPTCL100004 |  | Backfilling Works for Trench | 12d | 2026-11-16 | 2026-11-29 | TAEXPTCL100003 |  | 98d |
| TAEXPTCL100006 |  | Install fire hydrent | 6d | 2027-05-03 | 2027-05-09 | TAEXPTCL100003, TAEXPTCL080006 |  | 28d |
| TAEXPTCL100005 |  | Install Valves with fittings | 4d | 2027-05-05 | 2027-05-09 | TAEXPTCL100004 FF, TAPQDVPT00021, TAEXPTCL080005 |  | 20d |
| TAEXPTCL100007 |  | Valve Chamber works | 14d | 2027-05-10 | 2027-05-25 | TAEXPTCL100006 |  | 35d |
| TAEXPTCL100008 |  | Inspection Test | 4d | 2027-05-26 | 2027-05-30 | TAEXPTCL100007 |  | 50d |
|  | 2 | **TSE Networks** |  | 2026-08-30 | 2027-06-03 |  |  |  |
| TAEXTSCL100001 |  | Excavation works for Trench | 28d | 2026-08-30 | 2026-09-30 | TAEXTSCL080001 |  | 54d |
| TAEXTSCL100002 |  | Bedding Works | 2d | 2026-11-07 | 2026-11-08 | TAEXTSCL100001, TAEXPTCL100002 |  | 108d |
| TAEXTSCL100003 |  | Install Pipes & Fittings | 8d | 2026-11-16 | 2026-11-24 | TAEXTSCL100002, TAEXPTCL100003 |  | 102d |
| TAEXTSCL100004 |  | Backfilling Works for Trench | 12d | 2026-11-30 | 2026-12-13 | TAEXTSCL100003, TAEXPTCL100004 |  | 98d |
| TAEXTSCL100005 |  | Install Valves with fittings | 4d | 2027-02-20 | 2027-02-23 | TAEXTSCL100004 FF, TAEXTSCL080005 |  | 118d |
| TAEXTSCL100006 |  | Valve Chamber works | 14d | 2027-02-24 | 2027-03-11 | TAEXTSCL100005 |  | 118d |
| TAEXTSCL100007 |  | Inspection Test | 4d | 2027-05-31 | 2027-06-03 | TAEXTSCL100006, TAEXPTCL100008 |  | 50d |
|  | 3 | **Sewerage Networks** |  | 2025-12-01 | 2027-06-07 |  |  |  |
| TAEXSWCL100001 |  | Excavation works for Trench | 6d | 2025-12-01 A | 2025-12-07 A | TAEXSWCL010001 | 100% |  |
| TAEXSWCL100002 |  | Bedding Works | 2d | 2025-12-27 A | 2025-12-28 A | TAEXSWCL100001 | 100% |  |
| TAEXSWCL100003 |  | Install GRP Pipes & Fittings | 5d | 2025-12-29 A | 2026-01-03 A | TAEXSWCL100002 | 100% |  |
| TAEXSWCL100004 |  | Backfilling Works for Trench | 8d | 2026-01-15 A | 2026-01-24 A | TAEXSWCL100003 | 100% |  |
| TAEXSWCL100005 |  | Manhole Installation with backfilling | 9d | 2026-04-09 A | 2026-04-19 A | TAEXSWCL100003, TAEXSWCL100004 | 100% |  |
| TAEXSWCL1000011 |  | Excavation works for Trench Part 01 | 3d | 2026-12-06 | 2026-12-08 | TAEXSWCC0200011 |  | 2d |
| TAEXSWCL1000021 |  | Bedding Works Part 01 | 2d | 2027-01-21 | 2027-01-23 | TAEXSWCL100002, TAEXSWCL1000011, TAEXSTCL100006 |  | 138d |
| TAEXSWCL1000031 |  | Install GRP Pipes & Fittings Part 01 | 5d | 2027-01-24 | 2027-01-28 | TAEXSWCL100003, TAEXSWCL1000021 |  | 138d |
| TAEXSWCL1000041 |  | Backfilling Works for Trench Part 01 | 5d | 2027-02-10 | 2027-02-15 | TAEXSWCL1000031 FF+15d, TAEXSWCL100004 |  | 138d |
| TAEXSWCL1000051 |  | Manhole Installation with backfilling Part 01 | 5d | 2027-02-16 | 2027-02-21 | TAEXSWCL100005, TAPQDVSW00021, TAEXSWCL1000041 |  | 138d |
| TAEXSWCL100006 |  | Leakage Test | 3d | 2027-06-05 | 2027-06-07 | TAEXSWCL1000051, TAEXTSCL100007 |  | 50d |
|  | 4 | **Storm Networks** |  | 2026-08-15 | 2027-06-10 |  |  |  |
| TAEXSTCL100001 |  | Excavation works for Trench | 13d | 2026-08-15 | 2026-08-29 | TAEXSTCU21000611 |  | 43d |
| TAEXSTCL100002 |  | Bedding Works | 4d | 2026-08-30 | 2026-09-02 | TAEXSTCL100001 |  | 62d |
| TAEXSTCL100003 |  | Install GRP Pipes & Fittings | 7d | 2026-09-03 | 2026-09-10 | TAEXSTCL100002 |  | 62d |
| TAEXSTCL100004 |  | Backfilling Works for Trench | 14d | 2026-09-13 | 2026-09-28 | TAEXSTCL100003 FF+15d |  | 62d |
| TAEXSTCL100005 |  | Manhole Installation with backfilling | 12d | 2026-10-20 | 2026-11-02 | TAEXSTCL100004 FF+27d, TAEXSTCL100003, TAPQDVST00061 |  | 59d |
| TAEXSTCL100006 |  | Install Catch Basin with UPVC Pipes & Fittings | 9d | 2027-01-11 | 2027-01-20 | TAEXSTCL100005, TAEXSTCU210006 |  | 0d |
| TAEXSTCL100007 |  | Leakage Test | 3d | 2027-06-08 | 2027-06-10 | TAEXSTCL100005, TAEXSTCL100006, TAEXSWCL100006 |  | 52d |
|  | NEWPROJ-16-1-9-4 | **AMANAH ROAD** |  | 2026-03-15 | 2027-08-23 |  |  |  |
| TAEXRDCA010001 |  | Preperation Wprks for Existing layer | 5d | 2026-03-15 A | 2026-03-19 A | TAGNML0022 SS | 100% |  |
| TAEXRDCA020002 |  | MBC1 LAYER | 9d | 2026-03-21 A | 2026-03-30 A | TAEXRDCA010001 | 100% |  |
| TAEXRDCA020003 |  | BBC BASE COURSE | 10d | 2026-03-24 A | 2026-04-04 A | TAEXRDCA020002 | 100% |  |
| TAEXRDCA030004 |  | Precast Concret Kerps | 22d | 2026-04-15 A | 2026-05-10 A | TAEXRDCA020003 | 100% |  |
| TAEXRDCA040005 |  | Road Marking | 18d | 2026-04-25 A | 2026-05-14 A | TAEXRDCA020003, TAEXRDCA030004 | 100% |  |
| TAEXRDCA050006 |  | Traffic Sinage | 4d | 2026-05-21 A | 2026-05-25 A | TAEXRDCA040005 FS+6d | 100% |  |
| TAEXRDCA050007 |  | Backfilling Works for Road | 25d | 2027-07-26 | 2027-08-23 | TAGNZM0005 |  | 10d |
|  | 10 | **ZONE 2** |  | 2025-10-11 | 2027-08-11 |  |  |  |
|  | 1 | **Collector Road 01** |  | 2025-10-21 | 2027-07-12 |  |  |  |
|  | 13 | **Road Works** |  | 2025-10-21 | 2027-04-13 |  |  |  |
| TAEXRDCC010001 |  | Road Excavation and Disposal | 9d | 2025-10-21 A | 2025-10-31 A | TAEXRDCL100001 | 100% |  |
| TAEXRDCC010002 |  | Backfilling Works for Road | 9d | 2025-11-06 A | 2025-11-16 A | TAEXRDCC010001 | 100% |  |
| TAEXRDCC010003 |  | Subgrade Works | 10d | 2026-02-10 A | 2026-02-21 A | TAEXRDCC010002 | 100% |  |
| TAEXRDCC0100011 |  | Road Excavation and Disposal Part 01 | 3d | 2026-12-17 | 2026-12-20 | TAEXRDCC010001, TAEXTSCC010006 |  | 8d |
| TAEXRDCC0100021 |  | Backfilling Works for Road Part 01 | 3d | 2026-12-21 | 2026-12-23 | TAEXRDCC0100011, TAEXRDCC010002 |  | 8d |
| TAEXRDCC0100031 |  | Subgrade Works Part 01 | 13d | 2026-12-24 | 2027-01-07 | TAEXRDCC010003, TAEXRDCC0100021 |  | 8d |
| TAEXRDCC010004 |  | ABC aggregate Base Course Works | 18d | 2027-01-09 | 2027-01-28 | TAEXSTCC010006, TAEXRDCC0100031, TAPQDVRD00011 |  | 8d |
| TAEXRDCC010005 |  | MBC1 layer | 2d | 2027-01-30 | 2027-01-31 | TAEXRDCC010004 |  | 8d |
| TAEXRDCC010006 |  | BBC Base Course | 4d | 2027-02-01 | 2027-02-04 | TAEXRDCC010005 |  | 8d |
| TAEXRDCC010008 |  | Precast Concret Kerps | 18d | 2027-02-15 | 2027-03-07 | TAEXRDCC010006, TAEXRDCL100008 |  | 0d |

| ID | WBS | Task | Duration | Start | Finish | Predecessors | Complete | Total float |
| --- | --- | --- | --- | --- | --- | --- | --- | --- |
| TAEXRDCC010007 |  | BWC Asphalt Wearing Course with RC | 2d | 2027-03-08 | 2027-03-09 | TAEXRDCC010008 |  | 88d |
| TAEXRDCC010009 |  | Precast Interlock Works | 16d | 2027-03-10 | 2027-03-28 | TAEXRDCC010008, TAEXRDCC010007, TAEXRDCC010006 |  | 88d |
| TAEXRDCC010010 |  | Stone Paving works | 9d | 2027-03-29 | 2027-04-07 | TAEXRDCC010009 |  | 88d |
| TAEXRDCC010011 |  | Road Marking | 2d | 2027-04-08 | 2027-04-10 | TAEXRDCC010010 |  | 88d |
| TAEXRDCC010012 |  | Traffic Sinage | 3d | 2027-04-11 | 2027-04-13 | TAEXRDCC010011 |  | 88d |
|  | 11 | **Electrical Works** |  | 2026-11-02 | 2027-06-02 |  |  |  |
| TAEXELCC010001 |  | Trench Cut off | 13d | 2026-11-02 | 2026-11-16 | TAEXELCL100001 |  | 0d |
| TAEXELCC010002 |  | Drawpit and PVC Pipes Installation | 10d | 2027-03-02 | 2027-03-13 | TAEXELCC010001, TAPQDVEL0005 |  | 83d |
| TAEXELCC010003 |  | Road Crossing Ducts | 2d | 2027-03-14 | 2027-03-15 | TAEXELCC010002 |  | 83d |
| TAEXELCC010006 |  | Poles RC Foundation | 3d | 2027-03-14 | 2027-03-16 | TAEXELCC010002, TAPQDVEL0005 |  | 93d |
| TAEXELCC010004 |  | Trench Backfilling | 15d | 2027-03-16 | 2027-04-01 | TAEXELCC010003 |  | 83d |
| TAEXELCC010005 |  | Cables Pulling | 4d | 2027-04-03 | 2027-04-06 | TAEXELCC010002, TAEXELCC010003, TAEXELCC010004 |  | 83d |
| TAEXELCC010008 |  | Lighting Pole Installation with Luminares | 10d | 2027-04-07 | 2027-04-18 | TAEXELCC010006, TAEXELCC010005 |  | 83d |
| TAEXELCC010007 |  | Earthing cables | 2d | 2027-06-01 | 2027-06-02 | TAEXELCC010006, TAEXELCL100007 |  | 28d |
|  | 1 | **Telecommunication Works** |  | 2026-11-28 | 2027-05-08 |  |  |  |
| TAEXTCCC010001 |  | Trench Cut off | 23d | 2026-11-28 | 2026-12-23 | TAEXTCCL100001 |  | 45d |
| TAEXTCCC010002 |  | Drawpit and HDPE Pipes Installation | 10d | 2027-04-07 | 2027-04-18 | TAEXTCCC010001, TAEXTCCL100002 |  | 0d |
| TAEXTCCC010003 |  | Road Crossing Ducts | 2d | 2027-04-19 | 2027-04-20 | TAEXTCCC010002 |  | 65d |
| TAEXTCCC010004 |  | Trench Backfilling | 15d | 2027-04-21 | 2027-05-08 | TAEXTCCC010003 |  | 65d |
|  | 2 | **CCTV Works** |  | 2026-11-09 | 2027-06-15 |  |  |  |
| TAEXCCCC010001 |  | Pipe Installation with manhole | 12d | 2026-11-09 | 2026-11-22 | TAEXCCCL100001 |  | 0d |
| TAEXCCCC010002 |  | CCTV Swiches Lighting panels Installation | 16d | 2027-04-25 | 2027-05-12 | TAEXCCCC010001, TAEXCCCL100002 |  | 0d |
| TAEXCCCC010003 |  | Cable laying and connected with Panels | 12d | 2027-05-13 | 2027-05-26 | TAEXCCCC010002 |  | 49d |
| TAEXCCCC010004 |  | Pole Installation with IP Outdoor CCTV POE Camera | 17d | 2027-05-27 | 2027-06-15 | TAEXCCCC010003 |  | 49d |
|  | 3 | **Potable Networks** |  | 2026-05-06 | 2027-07-07 |  |  |  |
| TAEXPTCC010001 |  | Excavation works for Trench | 9d | 2026-05-06 A | 2026-05-16 A | TAEXPTCL070001 | 100% |  |
| TAEXPTCC0100011 |  | Excavation works for Trench Part 01 | 10d | 2026-09-26 | 2026-10-06 | TAEXPTCL0700011, TAEXPTCL0900011 |  | 1d |
| TAEXPTCC010002 |  | Bedding Works | 2d | 2026-10-07 | 2026-10-08 | TAEXPTCC0100011 |  | 8d |
| TAEXPTCC010003 |  | Install Pipes & Fittings | 14d | 2026-10-10 | 2026-10-25 | TAEXPTCC010002 |  | 8d |
| TAEXPTCC010004 |  | Backfilling Works for Trench | 16d | 2026-10-26 | 2026-11-12 | TAEXPTCC010003 |  | 8d |
| TAEXPTCC010006 |  | Install fire hydrent | 7d | 2027-04-11 | 2027-04-18 | TAEXPTCC010003, TAEXPTCL090006 |  | 19d |
| TAEXPTCC010005 |  | Install Valves with fittings | 8d | 2027-04-17 | 2027-04-25 | TAEXPTCC010004 FF, TAPQDVPT00021, TAEXPTCL090005 |  | 20d |
| TAEXPTCC010007 |  | Valve Chamber works | 20d | 2027-06-10 | 2027-07-03 | TAEXPTCC010006, TAEXPTCC020007 |  | 20d |
| TAEXPTCC010008 |  | Inspection Test | 4d | 2027-07-04 | 2027-07-07 | TAEXPTCC010007 |  | 20d |
|  | 4 | **TSE Networks** |  | 2026-07-09 | 2027-07-12 |  |  |  |
| TAEXTSCC010001 |  | Excavation works for Trench | 28d | 2026-07-09 | 2026-08-10 | TAEXTSCL0900011 |  | 54d |
| TAEXTSCC010002 |  | Bedding Works | 2d | 2026-10-10 | 2026-10-11 | TAEXTSCC010001, TAEXPTCC010002 |  | 22d |
| TAEXTSCC010003 |  | Install Pipes & Fittings | 14d | 2026-10-26 | 2026-11-10 | TAEXTSCC010002, TAEXPTCC010003 |  | 10d |
| TAEXTSCC010004 |  | Backfilling Works for Trench | 16d | 2026-11-14 | 2026-12-01 | TAEXTSCC010003, TAEXPTCC010004 |  | 8d |
| TAEXTSCC010005 |  | Install Valves with fittings | 8d | 2026-11-23 | 2026-12-01 | TAEXTSCC010004 FF |  | 8d |
| TAEXTSCC010006 |  | Valve Chamber works | 13d | 2026-12-02 | 2026-12-16 | TAEXTSCC010005 |  | 8d |
| TAEXTSCC010007 |  | Inspection Test | 4d | 2027-07-08 | 2027-07-12 | TAEXTSCC010006, TAEXPTCC010008 |  | 20d |
|  | 5 | **Sewerage Networks** |  | 2026-04-07 | 2027-02-04 |  |  |  |
| TAEXSWCC010001 |  | Excavation works for Trench | 7d | 2026-04-07 A | 2026-04-14 A | TAEXSWCL100001 | 100% |  |
| TAEXSWCC010002 |  | Bedding Works | 1d | 2026-05-06 A | 2026-05-06 A | TAEXSWCC010001 | 100% |  |
| TAEXSWCC010003 |  | Install GRP Pipes & Fittings | 4d | 2026-05-07 A | 2026-05-11 A | TAEXSWCC010002 | 100% |  |
| TAEXSWCC010004 |  | Backfilling Works for Trench | 8d | 2026-05-12 A | 2026-05-20 A | TAEXSWCC010003 | 100% |  |
| TAEXSWCC0100011 |  | Excavation works for Trench Part 01 | 5d | 2026-12-09 | 2026-12-14 | TAEXSWCC010001, TAEXSWCL1000011 |  | 2d |
| TAEXSWCC0100021 |  | Bedding Works Part 01 | 2d | 2026-12-15 | 2026-12-16 | TAEXSWCC010002, TAEXSWCC0100011 |  | 144d |
| TAEXSWCC0100031 |  | Install GRP Pipes & Fittings Part 01 | 5d | 2026-12-17 | 2026-12-22 | TAEXSWCC010003, TAEXSWCC0100021 |  | 144d |
| TAEXSWCC0100041 |  | Backfilling Works for Trench Part 01 | 8d | 2027-01-10 | 2027-01-18 | TAEXSWCC0100031 FS+15d, TAEXSWCC010004 |  | 144d |
| TAEXSWCC010005 |  | Manhole Installation with backfilling | 14d | 2027-01-14 | 2027-01-30 | TAEXSWCC010003, TAEXSWCC0100041 FF+10d, TAPQDVSW00021 |  | 144d |
| TAEXSWCC010006 |  | Leakage Test | 5d | 2027-01-31 | 2027-02-04 | TAEXSWCC010005 |  | 144d |
|  | 6 | **Storm Networks** |  | 2025-12-31 | 2027-02-08 |  |  |  |
| TAEXSTCC010001 |  | Excavation works for Trench & Box Culvert | 15d | 2025-12-31 A | 2026-01-17 A | TAEXSTCU2100061 | 100% |  |
| TAEXSTCC010002 |  | Bedding Works | 2d | 2026-02-10 A | 2026-02-11 A | TAEXSTCC010001 | 100% |  |
| TAEXSTCC010003 |  | Install GRP Pipes & Fittings | 5d | 2026-03-28 A | 2026-04-01 A | TAEXSTCC010002 | 100% |  |
| TAEXSTCC010004 |  | Backfilling Works for Trench & Box Culvert | 14d | 2026-04-01 A | 2026-04-16 A | TAEXSTCC010008 FF+15d, TAEXSTCC010003 | 100% |  |
| TAEXSTCC010008 |  | Install Box Culvert Part 1 | 2d | 2026-04-15 A | 2026-04-16 A | TAEXSTCL010003, TAPQDVST0005 | 100% |  |
| TAEXSTCC010009 |  | Install Box Culvert Part 2 | 14d | 2026-04-15 A | 2026-04-30 A | TAEXSTCC010008 | 100% |  |
| TAEXSTCC010005 |  | Manhole Installation with backfilling | 5d | 2026-04-21 A | 2026-04-26 A | TAEXSTCC010003 SS | 100% |  |
| TAEXSTCC0100011 |  | Excavation works for Trench & Box Culvert Part 01 | 5d | 2026-06-03 | 2026-06-08 | TAEXSTCC010001 |  | 49d |
| TAEXSTCC0100021 |  | Bedding Works Part 01 | 1d | 2026-06-09 | 2026-06-09 | TAEXSTCC010002, TAEXSTCC0100011 |  | 142d |
| TAEXSTCC0100031 |  | Install GRP Pipes & Fittings Part 01 | 3d | 2026-06-10 | 2026-06-13 | TAEXSTCC010003, TAEXSTCC0100021 |  | 142d |
| TAEXSTCC0100041 |  | Backfilling Works for Trench & Box Culvert Part 01 | 8d | 2026-07-01 | 2026-07-09 | TAEXSTCC0100031 FS+15d, TAEXSTCC010004 |  | 142d |
| TAEXSTCC0100051 |  | Manhole Installation with backfilling Part 01 | 10d | 2026-10-20 | 2026-10-31 | TAEXSTCC0100031, TAEXSTCC010005, TAEXSTCC0100041 FF, TAPQDVST00061 |  | 45d |
| TAEXSTCC0100091 |  | Install Box Culvert Part 2 Part 01 | 10d | 2026-11-01 | 2026-11-11 | TAEXSTCC010009, TAEXSTCC0100031, TAPQDVST00051, TAEXSTCC0100051 |  | 45d |
| TAEXSTCC010006 |  | Install Catch Basin with UPVC Pipes & Fittings | 12d | 2026-11-12 | 2026-11-25 | TAEXSTCC0100051, TAEXSTCL0100031, TAEXSTCC0100091 |  | 45d |
| TAEXSTCC010007 |  | Leakage Test | 3d | 2027-02-06 | 2027-02-08 | TAEXSTCC010006, TAEXSTCC0100051, TAEXSTCC0100091, TAEXSWCC010006 |  | 152d |
|  | 11 | **Upgrade Local 28** |  | 2026-03-14 | 2027-06-24 |  |  |  |

| ID | WBS | Task | Duration | Start | Finish | Predecessors | Complete | Total float |
| --- | --- | --- | --- | --- | --- | --- | --- | --- |
|  | 24 | **Road Works** |  | 2027-03-08 | 2027-05-05 |  |  |  |
| TAEXRDCU280002 |  | Precast Concret Kerps | 15d | 2027-03-08 | 2027-03-24 | TAEXRDCC010008 |  | 0d |
| TAEXRDCU280001 |  | BWC Asphalt Wearing Course with RC | 1d | 2027-04-12 | 2027-04-12 | TAEXRDCU280002 FS+15d |  | 69d |
| TAEXRDCU280003 |  | Precast Interlock Works | 13d | 2027-04-13 | 2027-04-27 | TAEXRDCU280002, TAEXRDCU280001 |  | 69d |
| TAEXRDCU280004 |  | Stone Paving works | 4d | 2027-04-28 | 2027-05-02 | TAEXRDCU280003 |  | 69d |
| TAEXRDCU280005 |  | Road Marking | 1d | 2027-05-03 | 2027-05-03 | TAEXRDCU280004 |  | 69d |
| TAEXRDCU280006 |  | Traffic Sinage | 2d | 2027-05-04 | 2027-05-05 | TAEXRDCU280005 |  | 69d |
|  | 15 | **Electrical Works** |  | 2026-11-17 | 2027-06-07 |  |  |  |
| TAEXELCU280001 |  | Trench Cut off | 10d | 2026-11-17 | 2026-11-28 | TAEXELCC010001 |  | 0d |
| TAEXELCU280002 |  | Drawpit and PVC Pipes Installation | 11d | 2027-03-02 | 2027-03-14 | TAEXELCU280001, TAPQDVEL0005 |  | 69d |
| TAEXELCU280003 |  | Road Crossing Ducts | 4d | 2027-03-15 | 2027-03-18 | TAEXELCU280002 |  | 72d |
| TAEXELCU280004 |  | Trench Backfilling | 17d | 2027-03-20 | 2027-04-07 | TAEXELCU280003 |  | 72d |
| TAEXELCU280005 |  | Cables Pulling | 4d | 2027-04-08 | 2027-04-12 | TAEXELCU280002, TAEXELCU280003, TAEXELCU280004 |  | 72d |
| TAEXELCU280006 |  | Poles RC Foundation | 6d | 2027-04-10 | 2027-04-15 | TAEXELCU280002 FS+22d, TAPQDVEL0005 |  | 69d |
| TAEXELCU280008 |  | Lighting Pole Installation with Luminares | 8d | 2027-04-17 | 2027-04-25 | TAEXELCU280006 |  | 77d |
| TAEXELCU280007 |  | Earthing cables | 4d | 2027-06-03 | 2027-06-07 | TAEXELCU280006, TAEXELCU280005, TAEXELCC010007 |  | 28d |
|  | 1 | **Telecommunication Works** |  | 2026-12-24 | 2027-05-17 |  |  |  |
| TAEXTCCU280001 |  | Trench Cut off | 10d | 2026-12-24 | 2027-01-04 | TAEXTCCC010001 |  | 45d |
| TAEXTCCU280002 |  | Drawpit and PVC Pipes Installation | 8d | 2027-04-19 | 2027-04-27 | TAEXTCCU280001, TAEXTCCC010002 |  | 0d |
| TAEXTCCU280003 |  | Road Crossing Ducts | 4d | 2027-04-28 | 2027-05-02 | TAEXTCCU280002 |  | 57d |
| TAEXTCCU280004 |  | Trench Backfilling | 13d | 2027-05-03 | 2027-05-17 | TAEXTCCU280003 |  | 57d |
|  | 2 | **CCTV Works** |  | 2026-11-23 | 2027-06-23 |  |  |  |
| TAEXCCCU280001 |  | Pipe Installation with manhole | 12d | 2026-11-23 | 2026-12-06 | TAEXCCCC010001 |  | 0d |
| TAEXCCCU280002 |  | CCTV Swiches Lighting panels Installation | 14d | 2027-05-13 | 2027-05-29 | TAEXCCCU280001, TAEXCCCC010002 |  | 0d |
| TAEXCCCU280003 |  | Cable laying and connected with Panels | 10d | 2027-05-30 | 2027-06-09 | TAEXCCCU280002 |  | 42d |
| TAEXCCCU280004 |  | Pole Installation with IP Outdoor CCTV POE Camera | 12d | 2027-06-10 | 2027-06-23 | TAEXCCCU280003 |  | 42d |
|  | 3 | **Potable Networks** |  | 2026-11-04 | 2027-06-16 |  |  |  |
| TAEXPTCU280001 |  | Excavation works for Trench | 27d | 2026-11-04 | 2026-12-05 | TAEXPTCL100001 |  | 1d |
| TAEXPTCU280002 |  | Bedding Works | 2d | 2026-12-06 | 2026-12-07 | TAEXPTCU280001 |  | 152d |
| TAEXPTCU280003 |  | Install Pipes & Fittings | 8d | 2026-12-08 | 2026-12-16 | TAEXPTCU280002, TAEXPTCL100003 |  | 152d |
| TAEXPTCU280004 |  | Backfilling Works for Trench | 14d | 2026-12-17 | 2027-01-02 | TAEXPTCU280003 |  | 152d |
| TAEXPTCU280005 |  | Install Valves with fittings | 4d | 2026-12-29 | 2027-01-02 | TAEXPTCU280004 FF, TAPQDVPT00021 |  | 152d |
| TAEXPTCU280006 |  | Install fire hydrent | 6d | 2027-01-03 | 2027-01-09 | TAEXPTCU280003, TAEXPTCU280005 |  | 152d |
| TAEXPTCU280007 |  | Valve Chamber works | 15d | 2027-05-26 | 2027-06-12 | TAEXPTCU280006, TAEXPTCL100007 |  | 35d |
| TAEXPTCU280008 |  | Inspection Test | 4d | 2027-06-13 | 2027-06-16 | TAEXPTCU280007 |  | 35d |
|  | 4 | **TSE Networks** |  | 2026-10-01 | 2027-06-21 |  |  |  |
| TAEXTSCU280001 |  | Excavation works for Trench | 22d | 2026-10-01 | 2026-10-26 | TAEXTSCL100001 |  | 54d |
| TAEXTSCU280002 |  | Bedding Works | 2d | 2026-12-08 | 2026-12-09 | TAEXTSCU280001, TAEXPTCU280002 |  | 160d |
| TAEXTSCU280003 |  | Install Pipes & Fittings | 8d | 2026-12-10 | 2026-12-19 | TAEXTSCU280002, TAEXTSCL100003 |  | 160d |
| TAEXTSCU280004 |  | Backfilling Works for Trench | 14d | 2026-12-20 | 2027-01-04 | TAEXTSCU280003 |  | 160d |
| TAEXTSCU280005 |  | Install Valves with fittings | 4d | 2026-12-31 | 2027-01-04 | TAEXTSCU280004 FF |  | 160d |
| TAEXTSCU280006 |  | Valve Chamber works | 15d | 2027-01-05 | 2027-01-21 | TAEXTSCU280005 |  | 160d |
| TAEXTSCU280007 |  | Inspection Test | 4d | 2027-06-17 | 2027-06-21 | TAEXTSCU280006, TAEXPTCU280008 |  | 35d |
|  | 19 | **Storm Networks** |  | 2026-03-14 | 2027-06-24 |  |  |  |
| TAEXSTCU2100061 |  | Excavation works for Trench | 7d | 2026-03-14 A | 2026-03-21 A | TAEXSTCL090001 | 100% |  |
| TAEXSTCU2100071 |  | Bedding Works | 2d | 2026-04-09 A | 2026-04-11 A | TAEXSTCU2100061 | 100% |  |
| TAEXSTCU2100081 |  | Install GRP Pipes & Fittings | 7d | 2026-04-11 A | 2026-04-18 A | TAEXSTCU2100071 | 100% |  |
| TAEXSTCU2100091 |  | Backfilling Works for Trench | 10d | 2026-04-16 A | 2026-04-27 A | TAEXSTCU2100081 | 100% |  |
| TAEXSTCU2100101 |  | Manhole Installation with backfilling | 10d | 2026-04-19 A | 2026-04-29 A | TAEXSTCU2100081 | 100% |  |
| TAEXSTCU21000611 |  | Excavation works for Trench Part 01 | 5d | 2026-08-09 | 2026-08-13 | TAEXSTCL060001 |  | 43d |
| TAEXSTCU21000711 |  | Bedding Works Part 01 | 1d | 2026-08-15 | 2026-08-15 | TAEXSTCU2100071, TAEXSTCU21000611 |  | 57d |
| TAEXSTCU21000811 |  | Install GRP Pipes & Fittings Part 01 | 5d | 2026-08-16 | 2026-08-20 | TAEXSTCU2100081, TAEXSTCU21000711 |  | 57d |
| TAEXSTCU21000911 |  | Backfilling Works for Trench Part 01 | 7d | 2026-08-31 | 2026-09-07 | TAEXSTCU21000811 FF+15d, TAEXSTCU2100091 |  | 57d |
| TAEXSTCU21001011 |  | Manhole Installation with backfilling Part 01 | 5d | 2026-10-20 | 2026-10-25 | TAEXSTCU21000911 FS+10d, TAEXSTCU2100101, TAPQDVSW00021, TAPQDVST00061 |  | 31d |
| TAEXSTCU280006 |  | Install Catch Basin with UPVC Pipes & Fittings | 12d | 2026-10-26 | 2026-11-08 | TAEXSTCU21001011 |  | 31d |
| TAEXSTCU280007 |  | Leakage Test | 3d | 2027-06-22 | 2027-06-24 | TAEXSTCU21001011, TAEXSTCU280006, TAEXTSCU280007, TAEXTSCU280007 FF |  | 35d |
|  | 5 | **Local Road 02** |  | 2026-01-04 | 2027-07-25 |  |  |  |
|  | 2 | **Road Works** |  | 2026-01-04 | 2027-07-25 |  |  |  |
| TAEXRDC L020001 |  | Road Excavation and Disposal | 52d | 2026-01-04 A | 2026-03-05 A | TAEXRDCL080001 | 100% |  |
| TAEXRDC L020002 |  | Backfilling Works for Road | 40d | 2026-01-18 A | 2026-03-04 A | TAEXRDC L020001 | 100% |  |
| TAEXRDC L020003 |  | Subgrade Works | 54d | 2026-02-08 A | 2026-04-11 A | TAEXRDC L020002 | 100% |  |
| TAEXRDC L020004 |  | ABC aggregate Base Course Works | 8d | 2026-11-30 | 2026-12-08 | TAEXRDC L020003, TAEXSTCL0200061, TAPQDVRD00011, TAEXPTCL0200071 |  | 12d |
| TAEXRDC L020005 |  | MBC1 layer | 1d | 2026-12-09 | 2026-12-09 | TAEXRDC L020004 |  | 87d |
| TAEXRDC L020006 |  | BBC Base Course | 3d | 2026-12-10 | 2026-12-13 | TAEXRDC L020005 |  | 87d |
| TAEXRDC L020008 |  | Precast Concret Kerps | 9d | 2027-03-25 | 2027-04-04 | TAEXRDC L020006, TAEXRDCU280002 |  | 0d |
| TAEXRDC L020007 |  | BWC Asphalt Wearing Course with RC | 1d | 2027-05-12 | 2027-05-12 | TAEXRDC L020006, TAEXRDC L020008, TAEXRDCC030007 |  | 41d |
| TAEXRDC L020009 |  | Precast Interlock Works | 9d | 2027-05-13 | 2027-05-23 | TAEXRDC L020008, TAEXRDC L020007 |  | 45d |
| TAEXRDC L020010 |  | Stone Paving works | 4d | 2027-05-24 | 2027-05-27 | TAEXRDC L020009 |  | 45d |
| TAEXRDC L020011 |  | Road Marking | 3d | 2027-07-20 | 2027-07-22 | TAEXRDC L020010, TAPQDVRD00081 |  | 0d |
| TAEXRDC L020012 |  | Traffic Sinage | 2d | 2027-07-24 | 2027-07-25 | TAEXRDC L020011 |  | 0d |

| ID | WBS | Task | Duration | Start | Finish | Predecessors | Complete | Total float |
| --- | --- | --- | --- | --- | --- | --- | --- | --- |
|  | 1 | **Electrical Works** |  | 2026-11-29 | 2027-06-09 |  |  |  |
| TAEXELCL020001 |  | Trench Cut off | 9d | 2026-11-29 | 2026-12-08 | TAEXELCU280001 |  | 0d |
| TAEXELCL020002 |  | Drawpit and PVC Pipes Installation | 8d | 2027-03-02 | 2027-03-10 | TAEXELCL020001, TAPQDVEL0005 |  | 90d |
| TAEXELCL020003 |  | Road Crossing Ducts | 2d | 2027-03-11 | 2027-03-13 | TAEXELCL020002 |  | 90d |
| TAEXELCL020006 |  | Poles RC Foundation | 3d | 2027-03-11 | 2027-03-14 | TAEXELCL020002, TAPQDVEL0005 |  | 101d |
| TAEXELCL020004 |  | Trench Backfilling | 9d | 2027-03-14 | 2027-03-23 | TAEXELCL020003 |  | 90d |
| TAEXELCL020008 |  | Lighting Pole Installation with Luminares | 4d | 2027-03-15 | 2027-03-18 | TAEXELCL020006 |  | 109d |
| TAEXELCL020005 |  | Cables Pulling | 3d | 2027-03-24 | 2027-03-27 | TAEXELCL020002, TAEXELCL020003, TAEXELCL020004 |  | 90d |
| TAEXELCL020007 |  | Earthing cables | 2d | 2027-06-08 | 2027-06-09 | TAEXELCL020006, TAEXELCL020005, TAEXELCU280007 |  | 28d |
|  | 5 | **Telecommunication Works** |  | 2027-01-05 | 2027-05-13 |  |  |  |
| TAEXTCCL020001 |  | Trench Cut off | 6d | 2027-01-05 | 2027-01-11 | TAEXTCCU280001 |  | 45d |
| TAEXTCCL020002 |  | Drawpit and PVC Pipes Installation | 3d | 2027-04-28 | 2027-05-01 | TAEXTCCL020001, TAEXTCCU280002 |  | 0d |
| TAEXTCCL020003 |  | Road Crossing Ducts | 2d | 2027-05-02 | 2027-05-03 | TAEXTCCL020002 |  | 60d |
| TAEXTCCL020004 |  | Trench Backfilling | 9d | 2027-05-04 | 2027-05-13 | TAEXTCCL020003 |  | 60d |
|  | 3 | **CCTV Works** |  | 2026-12-07 | 2027-07-12 |  |  |  |
| TAEXCCCL020001 |  | Pipe Installation with manhole | 10d | 2026-12-07 | 2026-12-17 | TAEXCCCU280001 |  | 0d |
| TAEXCCCL020002 |  | CCTV Swiches Lighting panels Installation | 13d | 2027-05-30 | 2027-06-13 | TAEXCCCL020001, TAEXCCCU280002 |  | 0d |
| TAEXCCCL020003 |  | Cable laying and connected with Panels | 10d | 2027-06-14 | 2027-06-24 | TAEXCCCL020002 |  | 26d |
| TAEXCCCL020004 |  | Pole Installation with IP Outdoor CCTV POE Camera | 15d | 2027-06-26 | 2027-07-12 | TAEXCCCL020003 |  | 26d |
|  | 4 | **Potable Networks** |  | 2026-05-12 | 2027-04-04 |  |  |  |
| TAEXPTCL020001 |  | Excavation works for Trench | 4d | 2026-05-12 A | 2026-05-16 A | TAPQDVPT0001 | 100% |  |
| TAEXPTCL020002 |  | Bedding Works | 3d | 2026-05-17 A | 2026-05-19 A | TAEXPTCL020001 | 100% |  |
| TAEXPTCL020003 |  | Install Pipes & Fittings | 2d | 2026-05-19 A | 2026-05-20 A | TAEXPTCL020002 | 100% |  |
| TAEXPTCL020004 |  | Backfilling Works for Trench | 4d | 2026-05-20 A | 2026-05-24 A | TAEXPTCL020003 | 100% |  |
| TAEXPTCL020005 |  | Install Valves with fittings | 3d | 2026-05-23 A | 2026-05-25 A | TAEXPTCL020004 FF, TAEXPTCC030005 | 100% |  |
| TAEXPTCL020007 |  | Valve Chamber works | 10d | 2026-05-23 A | 2026-06-02 A | TAEXPTCL020006 | 100% |  |
| TAEXPTCL020006 |  | Install fire hydrent | 3d | 2026-05-31 A | 2026-06-02 A | TAEXPTCL020003 | 100% |  |
| TAEXPTCL0200051 |  | Install Valves with fittings Part 01 | 1d | 2026-10-08 | 2026-10-08 | TAEXPTCL020005, TAPQDVPT00021 |  | 38d |
| TAEXPTCL0200061 |  | Install fire hydrent Part 01 | 3d | 2026-11-22 | 2026-11-24 | TAEXPTCL020006, TAEXPTCL0200051, TAPQDVPT00031 |  | 1d |
| TAEXPTCL0200071 |  | Valve Chamber works Part 01 | 4d | 2026-11-25 | 2026-11-29 | TAEXPTCL0200061, TAEXPTCL020007 |  | 5d |
| TAEXPTCL020008 |  | Inspection Test | 4d | 2027-03-31 | 2027-04-04 | TAEXPTCL0200071, TAEXSTCU210007 |  | 77d |
|  | 6 | **TSE Networks** |  | 2026-04-12 | 2027-04-08 |  |  |  |
| TAEXTSCL020001 |  | Excavation works for Trench | 30d | 2026-04-12 A | 2026-05-16 A | TAEXTSCC030001 | 100% |  |
| TAEXTSCL020002 |  | Bedding Works | 25d | 2026-05-05 A | 2026-06-02 A | TAEXTSCL020001 | 100% |  |
| TAEXTSCL020003 |  | Install Pipes & Fittings | 24d | 2026-05-06 A | 2026-06-02 A | TAEXTSCL020002 | 100% |  |
| TAEXTSCL020005 |  | Install Valves with fittings | 3d | 2026-05-10 A | 2026-05-12 A | TAEXTSCL020004 FF, TAPQDVTS0002 | 100% |  |
| TAEXTSCL020004 |  | Backfilling Works for Trench | 16d | 2026-05-16 A | 2026-06-02 A | TAEXTSCL020003 | 100% |  |
| TAEXTSCL020006 |  | Valve Chamber works | 10d | 2026-05-17 A | 2026-05-27 A | TAEXTSCL020005 | 100% |  |
| TAEXTSCL0200051 |  | Install Valves with fittings Part 01 | 2d | 2027-03-15 | 2027-03-16 | TAEXTSCL020005, TAPQDVTS00021 |  | 77d |
| TAEXTSCL0200061 |  | Valve Chamber works Part 01 | 8d | 2027-03-17 | 2027-03-25 | TAEXTSCL020006, TAEXTSCL0200051 |  | 106d |
| TAEXTSCL020007 |  | Inspection Test | 4d | 2027-04-05 | 2027-04-08 | TAEXTSCL0200061, TAEXPTCL020008 |  | 98d |
|  | 20 | **Storm Networks** |  | 2026-02-21 | 2027-04-12 |  |  |  |
| TAEXSTCL020001 |  | Excavation works for Trench | 88d | 2026-02-21 A | 2026-06-02 A | TAEXSTCC030001 | 100% |  |
| TAEXSTCL020002 |  | Bedding Works | 71d | 2026-03-12 A | 2026-06-02 A | TAEXSTCL020001 | 100% |  |
| TAEXSTCL020003 |  | Install GRP Pipes & Fittings | 70d | 2026-03-14 A | 2026-06-02 A | TAEXSTCL020002 | 100% |  |
| TAEXSTCL020004 |  | Backfilling Works for Trench | 60d | 2026-03-25 A | 2026-06-02 A | TAEXSTCL020003 FF+15d | 100% |  |
| TAEXSTCL020005 |  | Manhole Installation with backfilling | 51d | 2026-04-05 A | 2026-06-02 A | TAEXSTCL020004 FF+10d, TAEXSTCL020003 | 100% |  |
| TAEXSTCL020006 |  | Install Catch Basin with UPVC Pipes & Fittings | 6d | 2026-05-24 A | 2026-05-30 A | TAEXSTCL020005 FS+24d, TAEXSTCC030006 FS+10d | 100% |  |
| TAEXSTCL0200061 |  | Install Catch Basin with UPVC Pipes & Fittings Part 01 | 4d | 2026-08-24 | 2026-08-27 | TAEXSTCL020006, TAPQDVST0009 |  | 53d |
| TAEXSTCL020007 |  | Leakage Test | 3d | 2027-04-10 | 2027-04-12 | TAEXSTCL020005, TAEXSTCL0200061, TAEXTSCL020007 |  | 98d |
|  | 7 | **Local Road 03** |  | 2025-10-12 | 2027-07-26 |  |  |  |
|  | 2 | **Road Works** |  | 2025-10-12 | 2027-05-02 |  |  |  |
| TAEXRDCL030001 |  | Road Excavation and Disposal | 56d | 2025-10-12 A | 2025-12-15 A | TAEXRDCL050001 FS+7d | 100% |  |
| TAEXRDCL030002 |  | Backfilling Works for Road | 9d | 2026-04-15 A | 2026-04-25 A | TAEXRDCL030001 | 100% |  |
| TAEXRDCL0300021 |  | Backfilling Works for Road Part 01 | 9d | 2026-12-23 | 2027-01-02 | TAEXRDCL030002, TAEXRDCL0400021, TAEXPTCL030006 |  | 1d |
| TAEXRDCL030003 |  | Subgrade Works | 8d | 2027-01-03 | 2027-01-11 | TAEXRDCL0300021, TAEXRDCL040003 |  | 1d |
| TAEXRDCL030004 |  | ABC aggregate Base Course Works | 15d | 2027-01-12 | 2027-01-28 | TAEXRDCL030003, TAEXSTCL030006 FS+15d, TAPQDVRD00011 |  | 52d |
| TAEXRDCL030005 |  | MBC1 layer | 2d | 2027-01-30 | 2027-01-31 | TAEXRDCL030004 |  | 52d |
| TAEXRDCL030006 |  | BBC Base Course | 2d | 2027-02-01 | 2027-02-02 | TAEXRDCL030005 |  | 52d |
| TAEXRDCL030008 |  | Precast Concret Kerps | 9d | 2027-04-05 | 2027-04-14 | TAEXRDCL030006, TAEXRDC L020008 |  | 0d |
| TAEXRDCL030007 |  | BWC Asphalt Wearing Course with RC | 1d | 2027-04-15 | 2027-04-15 | TAEXRDCL030006, TAEXRDCL030008 |  | 72d |
| TAEXRDCL030009 |  | Precast Interlock Works | 8d | 2027-04-17 | 2027-04-25 | TAEXRDCL030008, TAEXRDCL030007 |  | 72d |
| TAEXRDCL030010 |  | Stone Paving works | 3d | 2027-04-26 | 2027-04-28 | TAEXRDCL030009 |  | 72d |
| TAEXRDCL030011 |  | Road Marking | 1d | 2027-04-29 | 2027-04-29 | TAEXRDCL030010 |  | 72d |
| TAEXRDCL030012 |  | Traffic Sinage | 2d | 2027-05-01 | 2027-05-02 | TAEXRDCL030011 |  | 72d |
|  | 1 | **Electrical Works** |  | 2026-12-09 | 2027-06-12 |  |  |  |
| TAEXELCL030001 |  | Trench Cut off | 11d | 2026-12-09 | 2026-12-21 | TAEXELCL020001 |  | 0d |
| TAEXELCL030002 |  | Drawpit and PVC Pipes Installation | 8d | 2027-03-02 | 2027-03-10 | TAEXELCL030001, TAPQDVEL0005 |  | 91d |
| TAEXELCL030003 |  | Road Crossing Ducts | 2d | 2027-03-11 | 2027-03-13 | TAEXELCL030002 |  | 91d |
| TAEXELCL030006 |  | Poles RC Foundation | 3d | 2027-03-11 | 2027-03-14 | TAEXELCL030002, TAPQDVEL0005 |  | 103d |

| ID | WBS | Task | Duration | Start | Finish | Predecessors | Complete | Total float |
| --- | --- | --- | --- | --- | --- | --- | --- | --- |
| TAEXELCL030004 |  | Trench Backfilling | 10d | 2027-03-14 | 2027-03-24 | TAEXELCL030003 |  | 91d |
| TAEXELCL030008 |  | Lighting Pole Installation with Luminares | 5d | 2027-03-15 | 2027-03-20 | TAEXELCL030006 |  | 108d |
| TAEXELCL030005 |  | Cables Pulling | 3d | 2027-03-25 | 2027-03-28 | TAEXELCL030002, TAEXELCL030003, TAEXELCL030004 |  | 91d |
| TAEXELCL030007 |  | Earthing cables | 2d | 2027-06-10 | 2027-06-12 | TAEXELCL030006, TAEXELCL030005, TAEXELCL020007 |  | 28d |
|  | 3 | **Telecommunication Works** |  | 2027-01-12 | 2027-05-19 |  |  |  |
| TAEXTCCL030001 |  | Trench Cut off | 7d | 2027-01-12 | 2027-01-19 | TAEXTCCL020001 |  | 45d |
| TAEXTCCL030002 |  | Drawpit and PVC Pipes Installation | 4d | 2027-05-02 | 2027-05-05 | TAEXTCCL030001, TAEXTCCL020002 |  | 0d |
| TAEXTCCL030003 |  | Road Crossing Ducts | 2d | 2027-05-06 | 2027-05-08 | TAEXTCCL030002 |  | 55d |
| TAEXTCCL030004 |  | Trench Backfilling | 10d | 2027-05-09 | 2027-05-19 | TAEXTCCL030003 |  | 55d |
|  | 4 | **CCTV Works** |  | 2026-12-19 | 2027-07-26 |  |  |  |
| TAEXCCCL030001 |  | Pipe Installation with manhole | 11d | 2026-12-19 | 2026-12-30 | TAEXCCCL020001 |  | 0d |
| TAEXCCCL030002 |  | CCTV Swiches Lighting panels Installation | 13d | 2027-06-14 | 2027-06-28 | TAEXCCCL030001, TAEXCCCL020002 |  | 0d |
| TAEXCCCL030003 |  | Cable laying and connected with Panels | 10d | 2027-06-29 | 2027-07-10 | TAEXCCCL030002 |  | 14d |
| TAEXCCCL030004 |  | Pole Installation with IP Outdoor CCTV POE Camera | 14d | 2027-07-11 | 2027-07-26 | TAEXCCCL030003 |  | 14d |
|  | 5 | **Potable Networks** |  | 2026-08-17 | 2027-01-25 |  |  |  |
| TAEXPTCL030001 |  | Excavation works for Trench | 17d | 2026-08-17 | 2026-09-05 | TAPQDVPT00011 |  | 0d |
| TAEXPTCL030002 |  | Bedding Works | 2d | 2026-09-06 | 2026-09-07 | TAEXPTCL030001, TAEXTSCL030002 |  | 0d |
| TAEXPTCL030003 |  | Install Pipes & Fittings | 7d | 2026-09-08 | 2026-09-15 | TAEXPTCL030002, TAEXPTCL020003, TAEXTSCL030003 |  | 0d |
| TAEXPTCL030004 |  | Backfilling Works for Trench | 10d | 2026-09-16 | 2026-09-27 | TAEXPTCL030003 |  | 0d |
| TAEXPTCL030005 |  | Install Valves with fittings | 4d | 2026-10-26 | 2026-10-29 | TAEXPTCL030004 FF, TAPQDVPT00021, TAEXPTCL040005 |  | 31d |
| TAEXPTCL030006 |  | Valve Chamber works | 16d | 2026-12-05 | 2026-12-22 | TAEXPTCL030008 SS, TAEXPTCL0200071, TAEXPTCL030005 |  | 1d |
| TAEXPTCL030008 |  | Install fire hydrent | 6d | 2026-12-05 | 2026-12-10 | TAEXPTCL030003, TAEXPTCL040006 |  | 1d |
| TAEXPTCL030007 |  | Inspection Test | 4d | 2027-01-21 | 2027-01-25 | TAEXPTCL030006, TAEXPTCL040008 |  | 157d |
|  | 6 | **TSE Networks** |  | 2026-06-09 | 2027-04-20 |  |  |  |
| TAEXTSCL030001 |  | Excavation works for Trench | 6d | 2026-06-09 | 2026-06-15 | TAEXTSCL040001 |  | 54d |
| TAEXTSCL030002 |  | Bedding Works | 2d | 2026-06-16 | 2026-06-17 | TAEXTSCL030001 |  | 63d |
| TAEXTSCL030003 |  | Install Pipes & Fittings | 7d | 2026-06-18 | 2026-06-25 | TAEXTSCL030002, TAEXTSCL020003 |  | 63d |
| TAEXTSCL030004 |  | Backfilling Works for Trench | 13d | 2026-09-28 | 2026-10-12 | TAEXTSCL030003, TAEXPTCL030004 |  | 0d |
| TAEXTSCL030005 |  | Install Valves with fittings | 4d | 2027-03-24 | 2027-03-28 | TAEXTSCL030004 FF, TAEXTSCL040005 |  | 77d |
| TAEXTSCL030006 |  | Valve Chamber works | 16d | 2027-03-29 | 2027-04-15 | TAEXTSCL030005 |  | 88d |
| TAEXTSCL030007 |  | Inspection Test | 4d | 2027-04-17 | 2027-04-20 | TAEXTSCL030006, TAEXPTCL030007 |  | 88d |
|  | 7 | **Sewerage Networks** |  | 2026-01-04 | 2026-06-02 |  |  |  |
| TAEXSWCL030001 |  | Excavation works for Trench | 19d | 2026-01-04 A | 2026-01-25 A | TAEXSWCL040001 | 100% |  |
| TAEXSWCL030002 |  | Bedding Works | 9d | 2026-01-27 A | 2026-02-05 A | TAEXSWCL030001 | 100% |  |
| TAEXSWCL030003 |  | Install GRP Pipes & Fittings | 75d | 2026-01-28 A | 2026-04-25 A | TAEXSWCL030002 | 100% |  |
| TAEXSWCL030004 |  | Backfilling Works for Trench | 94d | 2026-02-04 A | 2026-05-24 A | TAEXSWCL030003 FF+15d | 100% |  |
| TAEXSWCL030005 |  | Manhole Installation with backfilling | 45d | 2026-04-12 A | 2026-06-02 A | TAEXSWCL030004 FF+10d, TAEXSWCL030003, TAPQDVSW0002 | 100% |  |
| TAEXSWCL030006 |  | Leakage Test | 10d | 2026-05-23 A | 2026-06-02 A | TAEXSWCL030005 | 100% |  |
|  | 8 | **Storm Networks** |  | 2026-01-28 | 2027-04-24 |  |  |  |
| TAEXSTCL030001 |  | Excavation works for Trench | 72d | 2026-01-28 A | 2026-04-21 A | TAEXSTCU210001 | 100% |  |
| TAEXSTCL030002 |  | Bedding Works | 66d | 2026-02-15 A | 2026-05-02 A | TAEXSTCL030001 FS+2d | 100% |  |
| TAEXSTCL030003 |  | Install GRP Pipes & Fittings | 4d | 2026-02-18 A | 2026-02-22 A | TAEXSTCL030002 FS+10d | 100% |  |
| TAEXSTCL030004 |  | Backfilling Works for Trench | 11d | 2026-03-23 A | 2026-04-04 A | TAEXSTCL030003 | 100% |  |
| TAEXSTCL030005 |  | Manhole Installation with backfilling | 7d | 2026-05-23 A | 2026-05-30 A | TAEXSTCL030003 | 100% |  |
| TAEXSTCL0300031 |  | Install GRP Pipes & Fittings Part 01 | 3d | 2026-06-03 | 2026-06-06 | TAEXSTCL030003 |  | 89d |
| TAEXSTCL0300041 |  | Backfilling Works for Trench Part 01 | 4d | 2026-10-13 | 2026-10-17 | TAEXSTCL0300031 FF+25d, TAEXSTCL030004, TAEXTSCL030004 |  | 0d |
| TAEXSTCL0300051 |  | Manhole Installation with backfilling Part 01 | 3d | 2026-11-07 | 2026-11-09 | TAEXSTCL0300041 FF+20d, TAEXSTCL030005, TAPQDVST00061 |  | 0d |
| TAEXSTCL030006 |  | Install Catch Basin with UPVC Pipes & Fittings | 9d | 2026-11-10 | 2026-11-19 | TAEXSTCL050006, TAEXSTCL0300051 |  | 0d |
| TAEXSTCL030007 |  | Leakage Test | 3d | 2027-04-21 | 2027-04-24 | TAEXSTCL030006, TAEXSTCL0300051, TAEXTSCL030007 |  | 88d |
|  | 9 | **Local Road 04** |  | 2025-12-09 | 2027-08-07 |  |  |  |
|  | 2 | **Road Works** |  | 2026-05-23 | 2027-06-21 |  |  |  |
| TAEXRDCL040001 |  | Road Excavation and Disposal | 6d | 2026-05-23 A | 2026-05-28 A | TAEXRDC L020001 | 100% |  |
| TAEXRDCL040002 |  | Backfilling Works for Road | 5d | 2026-05-24 A | 2026-05-29 A | TAEXRDCL040001 | 100% |  |
| TAEXRDCL0400011 |  | Road Excavation and Disposal Part 01 | 3d | 2026-11-21 | 2026-11-23 | TAEXRDCL040001, TAEXSTCL0400051 |  | 18d |
| TAEXRDCL0400021 |  | Backfilling Works for Road Part 01 | 8d | 2026-11-24 | 2026-12-02 | TAEXRDCL040002, TAEXRDCL0400011 |  | 18d |
| TAEXRDCL040003 |  | Subgrade Works | 5d | 2026-12-15 | 2026-12-20 | TAEXRDCA010001 FF, TAEXRDCL0400021, TAEXRDCL050003 |  | 12d |
| TAEXRDCL040004 |  | ABC aggregate Base Course Works | 6d | 2026-12-21 | 2026-12-27 | TAEXRDCL040003, TAEXSTCL040006 FS+6d, TAPQDVRD00011 |  | 90d |
| TAEXRDCL040005 |  | MBC1 layer | 1d | 2026-12-28 | 2026-12-28 | TAEXRDCL040004 |  | 90d |
| TAEXRDCL040006 |  | BBC Base Course | 2d | 2026-12-29 | 2026-12-30 | TAEXRDCL040005 |  | 90d |
| TAEXRDCL040008 |  | Precast Concret Kerps | 16d | 2027-04-15 | 2027-05-03 | TAEXRDCL040006, TAEXRDCL030008 |  | 0d |
| TAEXRDCL040007 |  | BWC Asphalt Wearing Course with RC | 20d | 2027-05-04 | 2027-05-26 | TAEXRDCL040006, TAEXRDCL040008 |  | 29d |
| TAEXRDCL040009 |  | Precast Interlock Works | 12d | 2027-05-27 | 2027-06-09 | TAEXRDCL040008, TAEXRDCL040007 |  | 29d |
| TAEXRDCL040010 |  | Stone Paving works | 7d | 2027-06-10 | 2027-06-17 | TAEXRDCL040009 |  | 29d |
| TAEXRDCL040011 |  | Road Marking | 1d | 2027-06-19 | 2027-06-19 | TAEXRDCL040010 |  | 29d |
| TAEXRDCL040012 |  | Traffic Sinage | 2d | 2027-06-20 | 2027-06-21 | TAEXRDCL040011 |  | 29d |
|  | 1 | **Electrical Works** |  | 2026-12-22 | 2027-06-14 |  |  |  |
| TAEXELCL040001 |  | Trench Cut off | 14d | 2026-12-22 | 2027-01-06 | TAEXELCL030001 |  | 0d |
| TAEXELCL040002 |  | Drawpit and PVC Pipes Installation | 8d | 2027-03-02 | 2027-03-10 | TAEXELCL040001, TAPQDVEL0005 |  | 93d |
| TAEXELCL040003 |  | Road Crossing Ducts | 2d | 2027-03-11 | 2027-03-13 | TAEXELCL040002 |  | 93d |
| TAEXELCL040006 |  | Poles RC Foundation | 3d | 2027-03-11 | 2027-03-14 | TAEXELCL040002, TAPQDVEL0005 |  | 105d |

| ID | WBS | Task | Duration | Start | Finish | Predecessors | Complete | Total float |
| --- | --- | --- | --- | --- | --- | --- | --- | --- |
| TAEXELCL040004 |  | Trench Backfilling | 10d | 2027-03-14 | 2027-03-24 | TAEXELCL040003 |  | 93d |
| TAEXELCL040008 |  | Lighting Pole Installation with Luminares | 5d | 2027-03-15 | 2027-03-20 | TAEXELCL040006 |  | 108d |
| TAEXELCL040005 |  | Cables Pulling | 3d | 2027-03-25 | 2027-03-28 | TAEXELCL040002, TAEXELCL040003, TAEXELCL040004 |  | 93d |
| TAEXELCL040009 |  | Install Substation & RMU | 9d | 2027-04-22 | 2027-05-02 | TAEXELCL040005, TAPQDVEL0004 |  | 85d |
| TAEXELCL040007 |  | Earthing cables | 2d | 2027-06-13 | 2027-06-14 | TAEXELCL040006, TAEXELCL040005, TAEXELCL030007 |  | 28d |
|  | 3 | **Telecommunication Works** |  | 2027-01-20 | 2027-05-24 |  |  |  |
| TAEXTCCL040001 |  | Trench Cut off | 7d | 2027-01-20 | 2027-01-27 | TAEXTCCL030001 |  | 45d |
| TAEXTCCL040002 |  | Drawpit and PVC Pipes Installation | 4d | 2027-05-06 | 2027-05-10 | TAEXTCCL040001, TAEXTCCL030002 |  | 0d |
| TAEXTCCL040003 |  | Road Crossing Ducts | 2d | 2027-05-11 | 2027-05-12 | TAEXTCCL040002 |  | 51d |
| TAEXTCCL040004 |  | Trench Backfilling | 10d | 2027-05-13 | 2027-05-24 | TAEXTCCL040003 |  | 51d |
|  | 4 | **CCTV Works** |  | 2026-12-31 | 2027-08-07 |  |  |  |
| TAEXCCCL040001 |  | Pipe Installation with manhole | 10d | 2026-12-31 | 2027-01-11 | TAEXCCCL030001 |  | 0d |
| TAEXCCCL040002 |  | CCTV Swiches Lighting panels Installation | 10d | 2027-06-29 | 2027-07-10 | TAEXCCCL040001, TAEXCCCL030002 |  | 0d |
| TAEXCCCL040003 |  | Cable laying and connected with Panels | 10d | 2027-07-11 | 2027-07-21 | TAEXCCCL040002 |  | 4d |
| TAEXCCCL040004 |  | Pole Installation with IP Outdoor CCTV POE Camera | 14d | 2027-07-22 | 2027-08-07 | TAEXCCCL040003 |  | 4d |
|  | 5 | **Potable Networks** |  | 2026-09-06 | 2027-01-20 |  |  |  |
| TAEXPTCL040001 |  | Excavation works for Trench | 6d | 2026-09-06 | 2026-09-12 | TAEXPTCL090001, TAEXPTCL030001 |  | 0d |
| TAEXPTCL040002 |  | Bedding Works | 2d | 2026-09-13 | 2026-09-14 | TAEXPTCL040001 |  | 0d |
| TAEXPTCL040003 |  | Install Pipes & Fittings | 7d | 2026-09-26 | 2026-10-03 | TAEXPTCL040002, TAEXPTCL030003, TAEXTSCL040003 |  | 37d |
| TAEXPTCL040004 |  | Backfilling Works for Trench | 13d | 2026-10-11 | 2026-10-25 | TAEXPTCL040003, TAEXTSCL040004 |  | 31d |
| TAEXPTCL040005 |  | Install Valves with fittings | 4d | 2026-10-21 | 2026-10-25 | TAEXPTCL040004 FF, TAPQDVPT00021 |  | 31d |
| TAEXPTCL040006 |  | Install fire hydrent | 6d | 2026-11-28 | 2026-12-03 | TAEXPTCL040003, TAEXPTCL0500061 |  | 1d |
| TAEXPTCL040007 |  | Valve Chamber works | 21d | 2026-12-23 | 2027-01-16 | TAEXPTCL040006, TAEXPTCL030006 |  | 149d |
| TAEXPTCL040008 |  | Inspection Test | 4d | 2027-01-17 | 2027-01-20 | TAEXPTCL040007 |  | 157d |
|  | 6 | **TSE Networks** |  | 2026-06-03 | 2027-04-15 |  |  |  |
| TAEXTSCL040001 |  | Excavation works for Trench | 5d | 2026-06-03 | 2026-06-08 | TAEXTSCC020001 |  | 54d |
| TAEXTSCL040002 |  | Bedding Works | 2d | 2026-09-15 | 2026-09-16 | TAEXTSCL040001, TAEXPTCL040002 |  | 0d |
| TAEXTSCL040003 |  | Install Pipes & Fittings | 7d | 2026-09-17 | 2026-09-24 | TAEXTSCL040002, TAEXTSCL030003 |  | 31d |
| TAEXTSCL040004 |  | Backfilling Works for Trench | 13d | 2026-09-26 | 2026-10-10 | TAEXTSCL040003 |  | 31d |
| TAEXTSCL040005 |  | Install Valves with fittings | 4d | 2027-03-20 | 2027-03-23 | TAEXTSCL040004 FF, TAEXTSCL0500051 |  | 77d |
| TAEXTSCL040006 |  | Valve Chamber works | 16d | 2027-03-24 | 2027-04-11 | TAEXTSCL040005, TAEXPTCL040007 |  | 92d |
| TAEXTSCL040007 |  | Inspection Test | 4d | 2027-04-12 | 2027-04-15 | TAEXTSCL040006, TAEXPTCL040008 |  | 92d |
|  | 7 | **Sewerage Networks** |  | 2025-12-09 | 2026-05-23 |  |  |  |
| TAEXSWCL040001 |  | Excavation works for Trench | 18d | 2025-12-09 A | 2025-12-29 A | TAEXSWCC020001 | 100% |  |
| TAEXSWCL040002 |  | Bedding Works | 7d | 2025-12-30 A | 2026-01-06 A | TAEXSWCL040001 | 100% |  |
| TAEXSWCL040003 |  | Install GRP Pipes & Fittings | 94d | 2026-01-06 A | 2026-04-25 A | TAEXSWCL040002 | 100% |  |
| TAEXSWCL040004 |  | Backfilling Works for Trench | 102d | 2026-01-21 A | 2026-05-19 A | TAEXSWCL040003 FF+15d | 100% |  |
| TAEXSWCL040005 |  | Manhole Installation with backfilling | 36d | 2026-04-12 A | 2026-05-23 A | TAEXSWCL040004 FF+10d, TAEXSWCL040003, TAPQDVSW0002 | 100% |  |
| TAEXSWCL040006 |  | Leakage Test | 10d | 2026-05-09 A | 2026-05-19 A | TAEXSWCL040005 | 100% |  |
|  | 8 | **Storm Networks** |  | 2026-01-25 | 2027-04-19 |  |  |  |
| TAEXSTCL040001 |  | Excavation works for Trench | 7d | 2026-01-25 A | 2026-02-01 A | TAEXSTCL050001 | 100% |  |
| TAEXSTCL040002 |  | Bedding Works | 2d | 2026-02-21 A | 2026-02-22 A | TAEXSTCL040001 | 100% |  |
| TAEXSTCL040003 |  | Install GRP Pipes & Fittings | 6d | 2026-02-21 A | 2026-02-26 A | TAEXSTCL040002 FS+10d | 100% |  |
| TAEXSTCL040005 |  | Manhole Installation with backfilling | 10d | 2026-04-21 A | 2026-05-02 A | TAEXSTCL040003 | 100% |  |
| TAEXSTCL040004 |  | Backfilling Works for Trench | 10d | 2026-04-25 A | 2026-05-05 A | TAEXSTCL040003 | 100% |  |
| TAEXSTCL040007 |  | Leakage Test | 2d | 2026-05-23 A | 2026-05-24 A | TAEXSTCL040005 | 100% |  |
| TAEXSTCL0400011 |  | Excavation works for Trench Part 01 | 11d | 2026-06-03 | 2026-06-15 | TAEXSTCL040001, TAEXSTCL050001 |  | 43d |
| TAEXSTCL0400021 |  | Bedding Works Part 01 | 2d | 2026-09-17 | 2026-09-19 | TAEXSTCL040002, TAEXSTCL0400011, TAEXTSCL040002 |  | 0d |
| TAEXSTCL0400031 |  | Install GRP Pipes & Fittings Part 01 | 8d | 2026-09-20 | 2026-09-28 | TAEXSTCL040003, TAEXSTCL0400021 |  | 0d |
| TAEXSTCL0400041 |  | Backfilling Works for Trench Part 01 | 15d | 2026-10-11 | 2026-10-27 | TAEXSTCL0400031 FF+25d, TAEXSTCL040004 |  | 0d |
| TAEXSTCL0400051 |  | Manhole Installation with backfilling Part 01 | 13d | 2026-11-05 | 2026-11-19 | TAEXSTCL0400041 FF+20d, TAEXSTCL040005, TAPQDVST00061 |  | 0d |
| TAEXSTCL040006 |  | Install Catch Basin with UPVC Pipes & Fittings | 10d | 2026-11-21 | 2026-12-01 | TAEXSTCL030006, TAEXSTCL0400051 |  | 0d |
| TAEXSTCL0400071 |  | Leakage Test Part 01 | 3d | 2027-04-17 | 2027-04-19 | TAEXSTCL040007, TAEXSTCL040006, TAEXTSCL040007 |  | 92d |
|  | 2 | **Local Road 05** |  | 2025-10-11 | 2027-08-11 |  |  |  |
|  | 3 | **Road Works** |  | 2025-10-11 | 2027-06-07 |  |  |  |
| TAEXRDCL050001 |  | Road Excavation and Disposal | 56d | 2025-10-11 A | 2025-12-14 A | TAENSDRD0001 FS+42d, TAGNML0004 SS | 100% |  |
| TAEXRDCL050002 |  | Backfilling Works for Road | 3d | 2025-12-06 A | 2025-12-08 A | TAEXRDCL050001 | 100% |  |
| TAEXRDCL050003 |  | Subgrade Works | 5d | 2026-12-09 | 2026-12-14 | TAEXRDCL050002, TAEXRDC L020004 |  | 12d |
| TAEXRDCL050004 |  | ABC aggregate Base Course Works | 6d | 2027-01-02 | 2027-01-07 | TAEXRDCL050003, TAEXSTCL050006 FS+45d, TAPQDVRD00011 |  | 83d |
| TAEXRDCL050005 |  | MBC1 layer | 1d | 2027-01-09 | 2027-01-09 | TAEXRDCL050004 |  | 83d |
| TAEXRDCL050006 |  | BBC Base Course | 2d | 2027-01-10 | 2027-01-11 | TAEXRDCL050005 |  | 83d |
| TAEXRDCL050008 |  | Precast Concret Kerps | 17d | 2027-01-12 | 2027-01-31 | TAEXRDCL050006 |  | 94d |
| TAEXRDCL050007 |  | BWC Asphalt Wearing Course with RC | 1d | 2027-05-13 | 2027-05-13 | TAEXRDCL050006, TAEXRDCL050008, TAEXRDC L020007 |  | 41d |
| TAEXRDCL050009 |  | Precast Interlock Works | 15d | 2027-05-15 | 2027-05-31 | TAEXRDCL050008, TAEXRDCL050007 |  | 41d |
| TAEXRDCL050010 |  | Stone Paving works | 3d | 2027-06-01 | 2027-06-03 | TAEXRDCL050009 |  | 41d |
| TAEXRDCL050011 |  | Road Marking | 1d | 2027-06-05 | 2027-06-05 | TAEXRDCL050010 |  | 41d |
| TAEXRDCL050012 |  | Traffic Sinage | 2d | 2027-06-06 | 2027-06-07 | TAEXRDCL050011 |  | 41d |
|  | 1 | **Electrical Works** |  | 2027-01-07 | 2027-06-16 |  |  |  |
| TAEXELCL050001 |  | Trench Cut off | 12d | 2027-01-07 | 2027-01-20 | TAEXELCL040001 |  | 0d |
| TAEXELCL050002 |  | Drawpit and PVC Pipes Installation | 8d | 2027-03-02 | 2027-03-10 | TAEXELCL050001, TAPQDVEL0005 |  | 78d |

| ID | WBS | Task | Duration | Start | Finish | Predecessors | Complete | Total float |
| --- | --- | --- | --- | --- | --- | --- | --- | --- |
| TAEXELCL050003 |  | Road Crossing Ducts | 2d | 2027-03-11 | 2027-03-13 | TAEXELCL050002 |  | 95d |
| TAEXELCL050006 |  | Poles RC Foundation | 3d | 2027-03-11 | 2027-03-14 | TAEXELCL050002, TAPQDVEL0005 |  | 78d |
| TAEXELCL050004 |  | Trench Backfilling | 10d | 2027-03-14 | 2027-03-24 | TAEXELCL050003 |  | 95d |
| TAEXELCL050008 |  | Lighting Pole Installation with Luminares | 5d | 2027-03-15 | 2027-03-20 | TAEXELCL050006 |  | 78d |
| TAEXELCL050005 |  | Cables Pulling | 3d | 2027-03-25 | 2027-03-28 | TAEXELCL050002, TAEXELCL050003, TAEXELCL050004 |  | 95d |
| TAEXELCL050007 |  | Earthing cables | 2d | 2027-06-15 | 2027-06-16 | TAEXELCL050006, TAEXELCL050005, TAEXELCL040007 |  | 28d |
|  | 2 | **Telecommunication Works** |  | 2027-01-28 | 2027-05-29 |  |  |  |
| TAEXTCCL050001 |  | Trench Cut off | 7d | 2027-01-28 | 2027-02-04 | TAEXTCCL040001 |  | 45d |
| TAEXTCCL050002 |  | Drawpit and PVC Pipes Installation | 4d | 2027-05-11 | 2027-05-15 | TAEXTCCL050001, TAEXTCCL040002 |  | 0d |
| TAEXTCCL050003 |  | Road Crossing Ducts | 2d | 2027-05-16 | 2027-05-17 | TAEXTCCL050002 |  | 40d |
| TAEXTCCL050004 |  | Trench Backfilling | 10d | 2027-05-18 | 2027-05-29 | TAEXTCCL050003 |  | 40d |
|  | 4 | **CCTV Works** |  | 2027-01-12 | 2027-08-11 |  |  |  |
| TAEXCCCL050001 |  | Pipe Installation with manhole | 10d | 2027-01-12 | 2027-01-23 | TAEXCCCL040001 |  | 0d |
| TAEXCCCL050002 |  | CCTV Swiches Lighting panels Installation | 10d | 2027-07-11 | 2027-07-21 | TAEXCCCL050001, TAEXCCCL040002 |  | 0d |
| TAEXCCCL050003 |  | Cable laying and connected with Panels | 10d | 2027-07-22 | 2027-08-02 | TAEXCCCL050002 |  | 0d |
| TAEXCCCL050004 |  | Pole Installation with IP Outdoor CCTV POE Camera | 8d | 2027-08-03 | 2027-08-11 | TAEXCCCL050003 |  | 0d |
|  | 5 | **Potable Networks** |  | 2026-04-30 | 2027-04-08 |  |  |  |
| TAEXPTCL050001 |  | Excavation works for Trench | 13d | 2026-04-30 A | 2026-05-15 A | TAEXPTCC030001 | 100% |  |
| TAEXPTCL050002 |  | Bedding Works | 7d | 2026-05-10 A | 2026-05-17 A | TAEXPTCL050001 | 100% |  |
| TAEXPTCL050003 |  | Install Pipes & Fittings | 8d | 2026-05-14 A | 2026-05-23 A | TAEXPTCL050002 | 100% |  |
| TAEXPTCL050004 |  | Backfilling Works for Trench | 13d | 2026-05-19 A | 2026-06-02 A | TAEXPTCL050003 | 100% |  |
| TAEXPTCL050005 |  | Install Valves with fittings | 3d | 2026-05-19 A | 2026-05-21 A | TAEXPTCL050004 FF, TAEXPTCL020005 | 100% |  |
| TAEXPTCL050006 |  | Install fire hydrent | 2d | 2026-05-24 A | 2026-05-25 A | TAEXPTCL050003 | 100% |  |
| TAEXPTCL050007 |  | Valve Chamber works | 7d | 2026-05-24 A | 2026-05-31 A | TAEXPTCL050006 | 100% |  |
| TAEXPTCL0500051 |  | Install Valves with fittings Part 01 | 24d | 2026-10-08 | 2026-11-04 | TAEXPTCL050005, TAPQDVPT00021 |  | 18d |
| TAEXPTCL0500061 |  | Install fire hydrent Part 01 | 2d | 2026-11-25 | 2026-11-26 | TAEXPTCL050006, TAEXPTCL0500051, TAEXPTCL0200061 |  | 1d |
| TAEXPTCL0500071 |  | Valve Chamber works Part 01 | 9d | 2026-11-28 | 2026-12-07 | TAEXPTCL050007, TAEXPTCL0500061 |  | 52d |
| TAEXPTCL050008 |  | Inspection Test | 4d | 2027-04-05 | 2027-04-08 | TAEXPTCL0500071, TAEXPTCL020008 |  | 77d |
|  | 6 | **TSE Networks** |  | 2026-05-09 | 2027-04-13 |  |  |  |
| TAEXTSCL050001 |  | Excavation works for Trench | 4d | 2026-05-09 A | 2026-05-12 A | TAEXTSCL020001 | 100% |  |
| TAEXTSCL050002 |  | Bedding Works | 3d | 2026-05-17 A | 2026-05-19 A | TAEXTSCL050001 | 100% |  |
| TAEXTSCL050003 |  | Install Pipes & Fittings | 2d | 2026-05-19 A | 2026-05-20 A | TAEXTSCL050002 | 100% |  |
| TAEXTSCL050005 |  | Install Valves with fittings | 3d | 2026-05-19 A | 2026-05-21 A | TAEXTSCL050004 FF, TAEXTSCL020005 | 100% |  |
| TAEXTSCL050004 |  | Backfilling Works for Trench | 10d | 2026-05-23 A | 2026-06-02 A | TAEXTSCL050003 | 100% |  |
| TAEXTSCL050006 |  | Valve Chamber works | 8d | 2026-05-24 A | 2026-06-01 A | TAEXTSCL050005 | 100% |  |
| TAEXTSCL0500051 |  | Install Valves with fittings Part 01 | 2d | 2027-03-17 | 2027-03-18 | TAEXTSCL0200051 |  | 77d |
| TAEXTSCL0500061 |  | Valve Chamber works Part 01 | 8d | 2027-03-20 | 2027-03-28 | TAEXTSCL050006, TAEXTSCL0500051 |  | 87d |
| TAEXTSCL050007 |  | Inspection Test | 4d | 2027-04-10 | 2027-04-13 | TAEXTSCL0500061, TAEXPTCL050008 |  | 77d |
|  | 7 | **Sewerage Networks** |  | 2025-12-25 | 2027-04-15 |  |  |  |
| TAEXSWCL050001 |  | Excavation works for Trench | 23d | 2025-12-25 A | 2026-01-20 A | TAEXSWCL030001 | 100% |  |
| TAEXSWCL050002 |  | Bedding Works | 15d | 2026-01-04 A | 2026-01-20 A | TAEXSWCL050001 | 100% |  |
| TAEXSWCL050003 |  | Install GRP Pipes & Fittings | 5d | 2026-01-04 A | 2026-01-08 A | TAEXSWCL050002 | 100% |  |
| TAEXSWCL050004 |  | Backfilling Works for Trench | 13d | 2026-01-21 A | 2026-02-04 A | TAEXSWCL050003 | 100% |  |
| TAEXSWCL050005 |  | Manhole Installation with backfilling | 10d | 2026-04-11 A | 2026-04-21 A | TAEXSWCL050003 | 100% |  |
| TAEXSWCL050006 |  | Leakage Test | 2d | 2026-05-06 A | 2026-05-07 A | TAEXSWCL050005 | 100% |  |
| TAEXSWCL0500031 |  | Install GRP Pipes & Fittings Part 01 | 5d | 2027-03-20 | 2027-03-24 | TAEXSWCL050003, TAEXTSCL0500051 |  | 79d |
| TAEXSWCL0500041 |  | Backfilling Works for Trench Part 01 | 5d | 2027-03-25 | 2027-03-30 | TAEXSWCL0500031, TAEXSWCL050004 |  | 79d |
| TAEXSWCL0500051 |  | Manhole Installation with backfilling Part 01 | 8d | 2027-04-03 | 2027-04-11 | TAEXSWCL0500041 FF+10d, TAEXSWCL050005, TAPQDVSW00021 |  | 79d |
| TAEXSWCL0500061 |  | Leakage Test Part 01 | 2d | 2027-04-14 | 2027-04-15 | TAEXSWCL050006, TAEXSWCL0500051, TAEXTSCL050007 |  | 77d |
|  | 8 | **Storm Networks** |  | 2026-01-24 | 2027-04-19 |  |  |  |
| TAEXSTCL050001 |  | Excavation works for Trench | 52d | 2026-01-24 A | 2026-03-24 A | TAEXSTCL020001 | 100% |  |
| TAEXSTCL050002 |  | Bedding Works | 30d | 2026-02-18 A | 2026-03-24 A | TAEXSTCL050001 | 100% |  |
| TAEXSTCL050003 |  | Install GRP Pipes & Fittings | 56d | 2026-02-19 A | 2026-04-25 A | TAEXSTCL050002 | 100% |  |
| TAEXSTCL050004 |  | Backfilling Works for Trench | 48d | 2026-03-23 A | 2026-05-17 A | TAEXSTCL050003 FF+15d | 100% |  |
| TAEXSTCL050005 |  | Manhole Installation with backfilling | 11d | 2026-03-23 A | 2026-04-04 A | TAEXSTCL050004 FF+10d, TAEXSTCL050003 | 100% |  |
| TAEXSTCL0500051 |  | Manhole Installation with backfilling Part 01 | 8d | 2026-10-20 | 2026-10-28 | TAEXSTCL050005, TAPQDVST00061 |  | 0d |
| TAEXSTCL050006 |  | Install Catch Basin with UPVC Pipes & Fittings | 10d | 2026-10-29 | 2026-11-09 | TAEXSTCL0200061, TAEXSTCL0500051 |  | 0d |
| TAEXSTCL050007 |  | Leakage Test | 3d | 2027-04-17 | 2027-04-19 | TAEXSTCL050006, TAEXSTCL0500051, TAEXSWCL0500061 |  | 77d |
|  | 11 | **ZONE 3** |  | 2025-09-04 | 2027-08-30 |  |  |  |
|  | 1 | **Local Road 01** |  | 2026-01-25 | 2027-06-20 |  |  |  |
|  | 12 | **Road Works** |  | 2026-01-25 | 2027-06-17 |  |  |  |
| TAEXRDCL010001 |  | Road Excavation and Disposal | 111d | 2026-01-25 A | 2026-06-02 A | TAEXRDCL040001 | 100% |  |
| TAEXRDCL010002 |  | Backfilling Works for Road | 105d | 2026-02-01 A | 2026-06-02 A | TAEXRDCL010001 | 100% |  |
| TAEXRDCL010003 |  | Subgrade Works | 4d | 2026-02-12 A | 2026-02-16 A | TAEXRDCL010002 | 100% |  |
| TAEXRDCL0100031 |  | Subgrade Works Part 01 | 3d | 2027-01-12 | 2027-01-14 | TAEXRDCL010003, TAEXRDCL030003 |  | 1d |
| TAEXRDCL010004 |  | ABC aggregate Base Course Works | 8d | 2027-01-16 | 2027-01-24 | TAEXSTCL010007 FS+44d, TAEXRDCL0100031, TAPQDVRD00011 |  | 65d |
| TAEXRDCL010005 |  | MBC1 layer | 1d | 2027-01-25 | 2027-01-25 | TAEXRDCL010004 |  | 65d |
| TAEXRDCL010006 |  | BBC Base Course | 3d | 2027-01-26 | 2027-01-28 | TAEXRDCL010005 |  | 65d |
| TAEXRDCL010008 |  | Precast Concret Kerps | 14d | 2027-04-15 | 2027-05-01 | TAEXRDCL010006, TAEXRDCL040008 SS |  | 0d |
| TAEXRDCL010007 |  | BWC Asphalt Wearing Course with RC | 1d | 2027-05-02 | 2027-05-02 | TAEXRDCL010006, TAEXRDCL010008 |  | 39d |

| ID | WBS | Task | Duration | Start | Finish | Predecessors | Complete | Total float |
| --- | --- | --- | --- | --- | --- | --- | --- | --- |
| TAEXRDCL010009 |  | Precast Interlock Works | 15d | 2027-05-24 | 2027-06-09 | TAEXRDCL010008, TAEXRDCL010007 FS+18d |  | 39d |
| TAEXRDCL010010 |  | Stone Paving works | 4d | 2027-06-10 | 2027-06-14 | TAEXRDCL010009 |  | 39d |
| TAEXRDCL010011 |  | Road Marking | 1d | 2027-06-15 | 2027-06-15 | TAEXRDCL010010 |  | 39d |
| TAEXRDCL010012 |  | Traffic Sinage | 2d | 2027-06-16 | 2027-06-17 | TAEXRDCL010011 |  | 39d |
|  | 1 | **Electrical Works** |  | 2027-03-15 | 2027-06-20 |  |  |  |
| TAEXELCL010001 |  | Trench Cut off | 12d | 2027-03-15 | 2027-03-28 | TAEXELCU120001 |  | 0d |
| TAEXELCL010003 |  | Drawpit and PVC Pipes Installation | 8d | 2027-03-29 | 2027-04-06 | TAEXELCL010001, TAPQDVEL0005 |  | 27d |
| TAEXELCL010002 |  | Road Crossing Ducts | 4d | 2027-04-07 | 2027-04-11 | TAEXELCL010003 |  | 27d |
| TAEXELCL010006 |  | Poles RC Foundation | 3d | 2027-04-07 | 2027-04-10 | TAEXELCL010003, TAPQDVEL0005 |  | 86d |
| TAEXELCL010008 |  | Lighting Pole Installation with Luminares | 5d | 2027-04-11 | 2027-04-15 | TAEXELCL010006 |  | 92d |
| TAEXELCL010004 |  | Trench Backfilling | 10d | 2027-04-12 | 2027-04-22 | TAEXELCL010002 |  | 27d |
| TAEXELCL010005 |  | Cables Pulling | 3d | 2027-06-15 | 2027-06-17 | TAEXELCL010003, TAEXELCL010002, TAEXELCL010004 FS+45d |  | 27d |
| TAEXELCL010007 |  | Earthing cables | 2d | 2027-06-19 | 2027-06-20 | TAEXELCL010006, TAEXELCL010005, TAEXELCL050007 |  | 27d |
|  | 2 | **Telecommunication Works** |  | 2027-03-01 | 2027-06-02 |  |  |  |
| TAEXTCCL010001 |  | Trench Cut off | 7d | 2027-03-01 | 2027-03-08 | TAEXTCCU120001 |  | 45d |
| TAEXTCCL010002 |  | Drawpit and PVC Pipes Installation | 4d | 2027-05-16 | 2027-05-19 | TAEXTCCL010001, TAEXTCCL050002 |  | 0d |
| TAEXTCCL010003 |  | Road Crossing Ducts | 2d | 2027-05-20 | 2027-05-22 | TAEXTCCL010002 |  | 50d |
| TAEXTCCL010004 |  | Trench Backfilling | 10d | 2027-05-23 | 2027-06-02 | TAEXTCCL010003 |  | 50d |
|  | 16 | **CCTV Works** |  | 2027-03-22 | 2027-05-18 |  |  |  |
| TAEXCCCL010001 |  | Pipe Installation with manhole | 12d | 2027-03-22 | 2027-04-04 | TAEXCCCU120001 |  | 0d |
| TAEXCCCL010002 |  | CCTV Swiches Lighting panels Installation | 13d | 2027-04-05 | 2027-04-19 | TAEXCCCL010001 |  | 73d |
| TAEXCCCL010003 |  | Cable laying and connected with Panels | 10d | 2027-04-20 | 2027-05-01 | TAEXCCCL010002 |  | 73d |
| TAEXCCCL010004 |  | Pole Installation with IP Outdoor CCTV POE Camera | 15d | 2027-05-02 | 2027-05-18 | TAEXCCCL010003 |  | 73d |
|  | 17 | **Potable Networks** |  | 2026-06-02 | 2027-05-20 |  |  |  |
| TAEXPTCL010001 |  | Excavation works for Trench | 1d | 2026-06-02 A | 2026-06-02 A | TAEXPTCC010001 | 100% |  |
| TAEXPTCL0100011 |  | Excavation works for Trench Part 01 | 4d | 2026-09-13 | 2026-09-16 | TAEXPTCL040001 |  | 1d |
| TAEXPTCL010002 |  | Bedding Works | 2d | 2026-09-17 | 2026-09-19 | TAEXPTCL0100011, TAEXTSCL010002 |  | 76d |
| TAEXPTCL010003 |  | Install Pipes & Fittings | 8d | 2027-03-01 | 2027-03-09 | TAEXPTCL010002, TAEXPTCU120003 |  | 19d |
| TAEXPTCL010004 |  | Backfilling Works for Trench | 15d | 2027-03-10 | 2027-03-27 | TAEXPTCL010003 |  | 28d |
| TAEXPTCL010006 |  | Install fire hydrent | 6d | 2027-03-10 | 2027-03-16 | TAEXPTCL010003, TAEXPTCL030008 |  | 29d |
| TAEXPTCL010005 |  | Install Valves with fittings | 4d | 2027-03-25 | 2027-03-29 | TAEXPTCL010004 FF+2d, TAPQDVPT00021, TAEXPTCL030005 |  | 28d |
| TAEXPTCL010007 |  | Valve Chamber works | 15d | 2027-04-29 | 2027-05-16 | TAEXPTCL010006, TAEXPTCU120007 |  | 1d |
| TAEXPTCL010008 |  | Inspection Test | 4d | 2027-05-17 | 2027-05-20 | TAEXPTCL010007 |  | 65d |
|  | 3 | **TSE Networks** |  | 2026-06-02 | 2027-05-17 |  |  |  |
| TAEXTSCL010001 |  | Excavation works for Trench | 1d | 2026-06-02 A | 2026-06-02 A | TAEXTSCL070001 | 100% |  |
| TAEXTSCL0100011 |  | Excavation works for Trench Part 01 | 4d | 2026-06-16 | 2026-06-20 | TAEXTSCL030001 |  | 54d |
| TAEXTSCL010002 |  | Bedding Works | 2d | 2026-06-21 | 2026-06-22 | TAEXTSCL0100011 |  | 150d |
| TAEXTSCL010003 |  | Install Pipes & Fittings | 8d | 2027-03-29 | 2027-04-06 | TAEXTSCL010002, TAEXTSCU120003 |  | 54d |
| TAEXTSCL010004 |  | Backfilling Works for Trench | 15d | 2027-04-07 | 2027-04-24 | TAEXTSCL010003 |  | 58d |
| TAEXTSCL010005 |  | Install Valves with fittings | 4d | 2027-04-20 | 2027-04-24 | TAEXTSCL010004 FF, TAEXTSCL030005 |  | 58d |
| TAEXTSCL010006 |  | Valve Chamber works | 16d | 2027-04-25 | 2027-05-12 | TAEXTSCL010005 |  | 78d |
| TAEXTSCL010007 |  | Inspection Test | 4d | 2027-05-13 | 2027-05-17 | TAEXTSCL010006 |  | 78d |
|  | 13 | **Sewerage Networks** |  | 2026-03-28 | 2027-04-07 |  |  |  |
| TAEXSWCL010001 |  | Excavation works for Trench | 10d | 2026-03-28 A | 2026-04-07 A | TAEXSWCL060001 | 100% |  |
| TAEXSWCL010002 |  | Bedding Works | 2d | 2026-04-01 A | 2026-04-02 A | TAEXSWCL010001 | 100% |  |
| TAEXSWCL010003 |  | Install GRP Pipes & Fittings | 6d | 2026-04-04 A | 2026-04-10 A | TAEXSWCL010002 | 100% |  |
| TAEXSWCL010004 |  | Backfilling Works for Trench | 11d | 2026-04-11 A | 2026-04-22 A | TAEXSWCL010003 | 100% |  |
| TAEXSWCL010005 |  | Manhole Installation with backfilling | 7d | 2026-04-21 A | 2026-04-28 A | TAEXSWCL010003 | 100% |  |
| TAEXSWCL0100011 |  | Excavation works for Trench Part 01 | 10d | 2027-02-09 | 2027-02-20 | TAEXSWCL0600011 |  | 2d |
| TAEXSWCL0100021 |  | Bedding Works Part 01 | 2d | 2027-02-21 | 2027-02-22 | TAEXSWCL010002, TAEXSWCL0100011 |  | 97d |
| TAEXSWCL0100031 |  | Install GRP Pipes & Fittings Part 01 | 10d | 2027-02-23 | 2027-03-06 | TAEXSWCL010003, TAEXSWCL0100021 |  | 97d |
| TAEXSWCL0100041 |  | Backfilling Works for Trench Part 01 | 12d | 2027-03-10 | 2027-03-23 | TAEXSWCL0100031 FF+15d, TAEXSWCL010004 |  | 97d |
| TAEXSWCL0100051 |  | Manhole Installation with backfilling Part 01 | 10d | 2027-03-24 | 2027-04-04 | TAEXSWCL0100041 FF+10d, TAEXSWCL010005, TAPQDVSW00021 |  | 97d |
| TAEXSWCL010006 |  | Leakage Test | 3d | 2027-04-05 | 2027-04-07 | TAEXSWCL0100051 |  | 97d |
|  | 4 | **Storm Networks** |  | 2026-02-02 | 2026-11-19 |  |  |  |
| TAEXSTCL010001 |  | Excavation works for Trench & Box Culvert | 10d | 2026-02-02 A | 2026-02-12 A | TAEXSTCC010001 | 100% |  |
| TAEXSTCL010002 |  | Bedding Works | 2d | 2026-02-28 A | 2026-03-01 A | TAEXSTCL010001 | 100% |  |
| TAEXSTCL010003 |  | Install GRP Pipes & Fittings | 10d | 2026-03-31 A | 2026-04-11 A | TAEXSTCL010002 | 100% |  |
| TAEXSTCL010004 |  | Backfilling Works for Trench and Boxculvert | 12d | 2026-04-04 A | 2026-04-16 A | TAEXSTCL010003 | 100% |  |
| TAEXSTCL010008 |  | Install Box Culvert Part 1 | 2d | 2026-04-16 A | 2026-04-18 A | TAEXSTCL010003 SS | 100% |  |
| TAEXSTCL010005 |  | Manhole Installation with backfilling | 1d | 2026-04-25 A | 2026-04-25 A | TAEXSTCL010003, TAEXSTCL010004 | 100% |  |
| TAEXSTCL010009 |  | Install Box Culvert Part 2 | 14d | 2026-04-25 A | 2026-05-10 A | TAEXSTCL010008 | 100% |  |
| TAEXSTCL0100091 |  | Install Box Culvert Part 2 Part 01 | 10d | 2026-06-03 | 2026-06-14 | TAEXSTCL010009 |  | 163d |
| TAEXSTCL0100011 |  | Excavation works for Trench & Box Culvert Part 01 | 25d | 2026-06-16 | 2026-07-14 | TAEXSTCC0100011, TAEXSTCL0400011 |  | 43d |
| TAEXSTCL0100041 |  | Backfilling Works for Trench and Boxculvert Part 01 | 12d | 2026-06-18 | 2026-07-01 | TAEXSTCL0100091 FF+15d, TAEXSTCL010004 |  | 163d |
| TAEXSTCL0100021 |  | Bedding Works Part 01 | 5d | 2026-09-20 | 2026-09-24 | TAEXSTCL010002, TAEXSTCL0100011, TAEXPTCL010002 |  | 76d |
| TAEXSTCL0100031 |  | Install GRP Pipes & Fittings Part 01 | 10d | 2026-09-26 | 2026-10-06 | TAEXSTCL010003, TAEXSTCL0100021 |  | 76d |
| TAEXSTCL0100051 |  | Manhole Installation with backfilling Part 01 | 8d | 2026-10-20 | 2026-10-28 | TAEXSTCL010005, TAPQDVST00061, TAEXSTCL0100041 |  | 69d |
| TAEXSTCL010006 |  | Install Catch Basin with UPVC Pipes & Fittings | 11d | 2026-10-29 | 2026-11-10 | TAEXSTCL0100051 |  | 69d |
| TAEXSTCL010007 |  | Leakage Test | 3d | 2026-11-17 | 2026-11-19 | TAEXSTCL010006 FS+5d, TAEXSTCL0100051, TAEXSTCL0100091 |  | 69d |

| ID | WBS | Task | Duration | Start | Finish | Predecessors | Complete | Total float |
| --- | --- | --- | --- | --- | --- | --- | --- | --- |
|  | 5 | **Local Road 06** |  | 2025-12-18 | 2027-06-30 |  |  |  |
|  | 12 | **Road Works** |  | 2025-12-18 | 2027-06-27 |  |  |  |
| TAEXRDCL060001 |  | Road Excavation and Disposal | 24d | 2025-12-18 A | 2026-01-14 A | TAEXRDCC010001 | 100% |  |
| TAEXRDCL060002 |  | Backfilling Works for Road | 82d | 2026-02-28 A | 2026-06-02 A | TAEXRDCL060001 | 100% |  |
| TAEXRDCL060003 |  | Subgrade Works | 5d | 2026-03-08 A | 2026-03-12 A | TAEXRDCL060002 | 100% |  |
| TAEXRDCL060000 |  | Asphalt Milling and Deisposal | 4d | 2027-03-09 | 2027-03-13 | TAEXSTCL060007 |  | 2d |
| TAEXRDCL0600031 |  | Subgrade Works Part 01 | 4d | 2027-03-14 | 2027-03-17 | TAEXRDCL060000, TAEXRDCL060003 |  | 12d |
| TAEXRDCL060004 |  | ABC aggregate Base Course Works | 8d | 2027-03-18 | 2027-03-27 | TAEXSTCL060007, TAEXRDCL0600031, TAPQDVRD00011 |  | 12d |
| TAEXRDCL060005 |  | MBC1 layer | 1d | 2027-04-05 | 2027-04-05 | TAEXRDCL060004, TAEXRDCL080000 FS+15d, TAEXRDCL060000 |  | 5d |
| TAEXRDCL060006 |  | BBC Base Course | 6d | 2027-04-06 | 2027-04-12 | TAEXRDCL060005 |  | 5d |
| TAEXRDCL060008 |  | Precast Concret Kerps | 18d | 2027-05-02 | 2027-05-22 | TAEXRDCL060006, TAEXRDCL010008 |  | 0d |
| TAEXRDCL060007 |  | BWC Asphalt Wearing Course with RC | 2d | 2027-05-23 | 2027-05-24 | TAEXRDCL060006, TAEXRDCL060008 |  | 31d |
| TAEXRDCL060009 |  | Precast Interlock Works | 14d | 2027-05-25 | 2027-06-09 | TAEXRDCL060008, TAEXRDCL060007 |  | 31d |
| TAEXRDCL060010 |  | Stone Paving works | 12d | 2027-06-10 | 2027-06-23 | TAEXRDCL060009 |  | 31d |
| TAEXRDCL060011 |  | Road Marking | 1d | 2027-06-24 | 2027-06-24 | TAEXRDCL060010 |  | 31d |
| TAEXRDCL060012 |  | Traffic Sinage | 2d | 2027-06-26 | 2027-06-27 | TAEXRDCL060011 |  | 31d |
|  | 1 | **Electrical Works** |  | 2027-03-29 | 2027-06-30 |  |  |  |
| TAEXELCL060001 |  | Trench Cut off | 10d | 2027-03-29 | 2027-04-08 | TAEXELCL010001 |  | 0d |
| TAEXELCL060002 |  | Drawpit and PVC Pipes Installation | 5d | 2027-04-10 | 2027-04-14 | TAEXELCL060001, TAPQDVEL0005 |  | 20d |
| TAEXELCL060003 |  | Road Crossing Ducts | 2d | 2027-04-15 | 2027-04-17 | TAEXELCL060002 |  | 20d |
| TAEXELCL060006 |  | Poles RC Foundation | 4d | 2027-04-15 | 2027-04-19 | TAEXELCL060002, TAPQDVEL0005 |  | 80d |
| TAEXELCL060004 |  | Trench Backfilling | 14d | 2027-04-18 | 2027-05-03 | TAEXELCL060003 |  | 20d |
| TAEXELCL060008 |  | Lighting Pole Installation with Luminares | 6d | 2027-04-20 | 2027-04-26 | TAEXELCL060006 |  | 83d |
| TAEXELCL060005 |  | Cables Pulling | 3d | 2027-06-26 | 2027-06-28 | TAEXELCL060002, TAEXELCL060003, TAEXELCL060004 FS+45d |  | 20d |
| TAEXELCL060007 |  | Earthing cables | 2d | 2027-06-29 | 2027-06-30 | TAEXELCL060006, TAEXELCL060005, TAEXELCL010007 |  | 20d |
|  | 2 | **Telecommunication Works** |  | 2027-03-09 | 2027-06-13 |  |  |  |
| TAEXTCCL060001 |  | Trench Cut off | 10d | 2027-03-09 | 2027-03-20 | TAEXTCCL010001 |  | 45d |
| TAEXTCCL060002 |  | Drawpit and PVC Pipes Installation | 5d | 2027-05-20 | 2027-05-25 | TAEXTCCL060001, TAEXTCCL010002 |  | 0d |
| TAEXTCCL060003 |  | Road Crossing Ducts | 2d | 2027-05-26 | 2027-05-27 | TAEXTCCL060002 |  | 41d |
| TAEXTCCL060004 |  | Trench Backfilling | 14d | 2027-05-29 | 2027-06-13 | TAEXTCCL060003 |  | 41d |
|  | 17 | **CCTV Works** |  | 2027-04-05 | 2027-06-01 |  |  |  |
| TAEXCCCL060001 |  | Pipe Installation with manhole | 12d | 2027-04-05 | 2027-04-18 | TAEXCCCL010001 |  | 0d |
| TAEXCCCL060002 |  | CCTV Swiches Lighting panels Installation | 13d | 2027-04-19 | 2027-05-03 | TAEXCCCL060001 |  | 61d |
| TAEXCCCL060003 |  | Cable laying and connected with Panels | 10d | 2027-05-04 | 2027-05-15 | TAEXCCCL060002 |  | 61d |
| TAEXCCCL060004 |  | Pole Installation with IP Outdoor CCTV POE Camera | 15d | 2027-05-16 | 2027-06-01 | TAEXCCCL060003 |  | 61d |
|  | 16 | **Potable Networks** |  | 2026-10-07 | 2027-06-08 |  |  |  |
| TAEXPTCL060001 |  | Excavation works for Trench | 8d | 2026-10-07 | 2026-10-15 | TAEXPTCC0100011 |  | 1d |
| TAEXPTCL060002 |  | Bedding Works | 2d | 2026-10-17 | 2026-10-18 | TAEXPTCL060001, TAEXTSCL060002 |  | 70d |
| TAEXPTCL060003 |  | Install Pipes & Fittings | 8d | 2027-03-10 | 2027-03-18 | TAEXPTCL060002, TAEXPTCL010003 |  | 19d |
| TAEXPTCL060004 |  | Backfilling Works for Trench | 15d | 2027-03-20 | 2027-04-05 | TAEXPTCL060003 |  | 41d |
| TAEXPTCL060006 |  | Install fire hydrent | 6d | 2027-04-19 | 2027-04-25 | TAEXPTCL060003, TAEXPTCC010006 |  | 19d |
| TAEXPTCL060005 |  | Install Valves with fittings | 4d | 2027-04-26 | 2027-04-29 | TAEXPTCL060004 FF, TAPQDVPT00021, TAEXPTCC010005 |  | 20d |
| TAEXPTCL060007 |  | Valve Chamber works | 16d | 2027-05-17 | 2027-06-03 | TAEXPTCL060006, TAEXPTCL010007 |  | 1d |
| TAEXPTCL060008 |  | Inspection Test | 4d | 2027-06-05 | 2027-06-08 | TAEXPTCL060007 |  | 49d |
|  | 3 | **TSE Networks** |  | 2026-08-11 | 2027-06-13 |  |  |  |
| TAEXTSCL060001 |  | Excavation works for Trench | 8d | 2026-08-11 | 2026-08-19 | TAEXTSCC010001 |  | 54d |
| TAEXTSCL060002 |  | Bedding Works | 2d | 2026-08-20 | 2026-08-22 | TAEXTSCL060001 |  | 117d |
| TAEXTSCL060003 |  | Install Pipes & Fittings | 8d | 2027-04-07 | 2027-04-15 | TAEXTSCL060002, TAEXTSCL010003 |  | 54d |
| TAEXTSCL060004 |  | Backfilling Works for Trench | 15d | 2027-04-17 | 2027-05-03 | TAEXTSCL060003 |  | 54d |
| TAEXTSCL060005 |  | Install Valves with fittings | 4d | 2027-04-29 | 2027-05-03 | TAEXTSCL060004 FF, TAEXTSCL010005 |  | 54d |
| TAEXTSCL060006 |  | Valve Chamber works | 16d | 2027-05-04 | 2027-05-22 | TAEXTSCL060005 |  | 67d |
| TAEXTSCL060007 |  | Inspection Test | 4d | 2027-06-09 | 2027-06-13 | TAEXTSCL060006, TAEXPTCL060008 |  | 52d |
|  | 14 | **Sewerage Networks** |  | 2025-12-21 | 2027-03-11 |  |  |  |
| TAEXSWCL060001 |  | Excavation works for Trench | 10d | 2025-12-21 A | 2025-12-31 A | TAEXSWCL080001 | 100% |  |
| TAEXSWCL060002 |  | Bedding Works | 3d | 2025-12-30 A | 2026-01-01 A | TAEXSWCL060001 | 100% |  |
| TAEXSWCL060003 |  | Install GRP Pipes & Fittings | 12d | 2026-01-03 A | 2026-01-15 A | TAEXSWCL060002 | 100% |  |
| TAEXSWCL060004 |  | Backfilling Works for Trench | 10d | 2026-01-17 A | 2026-01-27 A | TAEXSWCL060003 | 100% |  |
| TAEXSWCL060005 |  | Manhole Installation with backfilling | 4d | 2026-04-14 A | 2026-04-18 A | TAEXSWCL060003 | 100% |  |
| TAEXSWCL0600011 |  | Excavation works for Trench Part 01 | 10d | 2027-01-28 | 2027-02-08 | TAEXSWCL0800011 |  | 2d |
| TAEXSWCL0600021 |  | Bedding Works Part 01 | 2d | 2027-02-09 | 2027-02-10 | TAEXSWCL060002, TAEXSWCL0600011 |  | 122d |
| TAEXSWCL0600031 |  | Install GRP Pipes & Fittings Part 01 | 5d | 2027-02-11 | 2027-02-16 | TAEXSWCL060003, TAEXSWCL0600021 |  | 122d |
| TAEXSWCL0600041 |  | Backfilling Works for Trench Part 01 | 10d | 2027-02-23 | 2027-03-06 | TAEXSWCL0600031 FF+15d, TAEXSWCL060004 |  | 122d |
| TAEXSWCL0600051 |  | Manhole Installation with backfilling Part 01 | 9d | 2027-02-24 | 2027-03-06 | TAEXSWCL0600041 FF, TAEXSWCL060005, TAPQDVSW00021 |  | 122d |
| TAEXSWCL060006 |  | Leakage Test | 3d | 2027-03-09 | 2027-03-11 | TAEXSTCL060007, TAEXSWCL0600051 |  | 120d |
|  | 4 | **Storm Networks** |  | 2026-07-15 | 2027-03-08 |  |  |  |
| TAEXSTCL060001 |  | Excavation works for Trench | 21d | 2026-07-15 | 2026-08-08 | TAEXSTCL0100011 |  | 43d |
| TAEXSTCL060002 |  | Bedding Works | 3d | 2026-10-19 | 2026-10-21 | TAEXSTCL060001, TAEXPTCL060002 |  | 70d |
| TAEXSTCL060003 |  | Install GRP Pipes & Fittings | 10d | 2026-10-22 | 2026-11-02 | TAEXSTCL060002 |  | 70d |
| TAEXSTCL060004 |  | Backfilling Works for Trench | 15d | 2026-11-03 | 2026-11-19 | TAEXSTCL060003 FF+15d |  | 70d |
| TAEXSTCL060005 |  | Manhole Installation with backfilling | 14d | 2026-11-16 | 2026-12-01 | TAEXSTCL060004 FF+10d, TAEXSTCL060003, TAPQDVST00061 |  | 70d |

| ID | WBS | Task | Duration | Start | Finish | Predecessors | Complete | Total float |
| --- | --- | --- | --- | --- | --- | --- | --- | --- |
| TAEXSTCL060006 |  | Install Catch Basin with UPVC Pipes & Fittings | 12d | 2027-02-20 | 2027-03-04 | TAEXSTCL060005, TAEXSTCL070006 |  | 2d |
| TAEXSTCL060007 |  | Leakage Test | 3d | 2027-03-06 | 2027-03-08 | TAEXSTCL060005, TAEXSTCL060006 |  | 2d |
|  | 2 | **Local Road 07** |  | 2026-01-21 | 2027-08-01 |  |  |  |
|  | 12 | **Road Works** |  | 2026-01-21 | 2027-08-01 |  |  |  |
| TAEXRDCL070001 |  | Road Excavation and Disposal | 8d | 2026-01-21 A | 2026-01-29 A | TAEXRDCL010001 FS+10d | 100% |  |
| TAEXRDCL070002 |  | Backfilling Works for Road | 66d | 2026-01-25 A | 2026-04-11 A | TAEXRDCL070001 | 100% |  |
| TAEXRDCL070003 |  | Subgrade Works | 54d | 2026-02-08 A | 2026-04-11 A | TAEXRDCL070002 | 100% |  |
| TAEXRDCL070004 |  | ABC aggregate Base Course Works | 3d | 2027-04-11 | 2027-04-13 | TAEXRDCL070003, TAEXSTCL070007 FS+40d, TAPQDVRD00011 |  | 1d |
| TAEXRDCL070005 |  | MBC1 layer | 1d | 2027-04-14 | 2027-04-14 | TAEXRDCL070004 |  | 1d |
| TAEXRDCL070006 |  | BBC Base Course | 2d | 2027-04-15 | 2027-04-17 | TAEXRDCL070005 |  | 1d |
| TAEXRDCL070008 |  | Precast Concret Kerps | 18d | 2027-05-23 | 2027-06-12 | TAEXRDCL070006, TAEXRDCL060008 |  | 0d |
| TAEXRDCL070007 |  | BWC Asphalt Wearing Course with RC | 1d | 2027-06-13 | 2027-06-13 | TAEXRDCL070006, TAEXRDCL070008 |  | 1d |
| TAEXRDCL070009 |  | Precast Interlock Works | 16d | 2027-06-23 | 2027-07-11 | TAEXRDCL070008, TAEXRDCL070007 FS+8d |  | 1d |
| TAEXRDCL070010 |  | Stone Paving works | 15d | 2027-07-12 | 2027-07-28 | TAEXRDCL070009 |  | 1d |
| TAEXRDCL070011 |  | Road Marking | 1d | 2027-07-29 | 2027-07-29 | TAEXRDCL070010 |  | 1d |
| TAEXRDCL070012 |  | Traffic Sinage | 2d | 2027-07-31 | 2027-08-01 | TAEXRDCL070011 |  | 1d |
|  | 1 | **Electrical Works** |  | 2027-04-10 | 2027-07-03 |  |  |  |
| TAEXELCL070001 |  | Trench Cut off | 12d | 2027-04-10 | 2027-04-22 | TAEXELCL060001 |  | 0d |
| TAEXELCL070002 |  | Drawpit and PVC Pipes Installation | 8d | 2027-04-24 | 2027-05-02 | TAEXELCL070001, TAPQDVEL0005 |  | 56d |
| TAEXELCL070003 |  | Road Crossing Ducts | 2d | 2027-05-03 | 2027-05-04 | TAEXELCL070002 |  | 56d |
| TAEXELCL070006 |  | Poles RC Foundation | 3d | 2027-05-03 | 2027-05-05 | TAEXELCL070002, TAPQDVEL0005 |  | 68d |
| TAEXELCL070004 |  | Trench Backfilling | 10d | 2027-05-05 | 2027-05-16 | TAEXELCL070003 |  | 56d |
| TAEXELCL070008 |  | Lighting Pole Installation with Luminares | 5d | 2027-05-06 | 2027-05-11 | TAEXELCL070006 |  | 70d |
| TAEXELCL070005 |  | Cables Pulling | 3d | 2027-05-17 | 2027-05-19 | TAEXELCL070002, TAEXELCL070003, TAEXELCL070004 |  | 56d |
| TAEXELCL070007 |  | Earthing cables | 2d | 2027-07-01 | 2027-07-03 | TAEXELCL070006, TAEXELCL070005, TAEXELCL060007 |  | 20d |
|  | 2 | **Telecommunication Works** |  | 2027-03-21 | 2027-06-13 |  |  |  |
| TAEXTCCL070001 |  | Trench Cut off | 6d | 2027-03-21 | 2027-03-27 | TAEXTCCL060001 |  | 45d |
| TAEXTCCL070002 |  | Drawpit and PVC Pipes Installation | 4d | 2027-05-26 | 2027-05-30 | TAEXTCCL070001, TAEXTCCL060002 |  | 0d |
| TAEXTCCL070003 |  | Road Crossing Ducts | 2d | 2027-05-31 | 2027-06-01 | TAEXTCCL070002 |  | 41d |
| TAEXTCCL070004 |  | Trench Backfilling | 10d | 2027-06-02 | 2027-06-13 | TAEXTCCL070003 |  | 41d |
|  | 18 | **CCTV Works** |  | 2027-04-19 | 2027-06-08 |  |  |  |
| TAEXCCCL070001 |  | Pipe Installation with manhole | 9d | 2027-04-19 | 2027-04-28 | TAEXCCCL060001 |  | 0d |
| TAEXCCCL070002 |  | CCTV Swiches Lighting panels Installation | 12d | 2027-04-29 | 2027-05-12 | TAEXCCCL070001 |  | 55d |
| TAEXCCCL070003 |  | Cable laying and connected with Panels | 10d | 2027-05-13 | 2027-05-24 | TAEXCCCL070002 |  | 55d |
| TAEXCCCL070004 |  | Pole Installation with IP Outdoor CCTV POE Camera | 13d | 2027-05-25 | 2027-06-08 | TAEXCCCL070003 |  | 55d |
|  | 3 | **Potable Networks** |  | 2026-04-22 | 2027-06-24 |  |  |  |
| TAEXPTCL070001 |  | Excavation works for Trench | 4d | 2026-04-22 A | 2026-04-26 A | TAEXPTCL050001 | 100% |  |
| TAEXPTCL0700011 |  | Excavation works for Trench Part 01 | 4d | 2026-09-21 | 2026-09-24 | TAEXPTCL070001, TAEXPTCL0900011 |  | 1d |
| TAEXPTCL070002 |  | Bedding Works | 2d | 2026-09-26 | 2026-09-27 | TAEXPTCL0700011 |  | 147d |
| TAEXPTCL070003 |  | Install Pipes & Fittings | 8d | 2027-03-20 | 2027-03-28 | TAEXPTCL070002, TAEXPTCL060003 |  | 19d |
| TAEXPTCL070004 |  | Backfilling Works for Trench | 13d | 2027-03-29 | 2027-04-12 | TAEXPTCL070003, TAEXTSCL0700041 |  | 20d |
| TAEXPTCL070006 |  | Install fire hydrent | 5d | 2027-03-29 | 2027-04-03 | TAEXPTCL070003, TAEXPTCL010006 |  | 19d |
| TAEXPTCL070005 |  | Install Valves with fittings | 4d | 2027-04-08 | 2027-04-12 | TAEXPTCL070004 FF, TAPQDVPT00021, TAEXPTCL010005 |  | 20d |
| TAEXPTCL070007 |  | Valve Chamber works | 14d | 2027-06-05 | 2027-06-20 | TAEXPTCL070006, TAEXPTCL060007 |  | 1d |
| TAEXPTCL070008 |  | Inspection Test | 4d | 2027-06-21 | 2027-06-24 | TAEXPTCL070007 |  | 35d |
|  | 4 | **TSE Networks** |  | 2026-03-23 | 2027-06-02 |  |  |  |
| TAEXTSCL070001 |  | Excavation works for Trench | 4d | 2026-03-23 A | 2026-03-27 A | TAEXTSCL050001 | 100% |  |
| TAEXTSCL070002 |  | Bedding Works | 1d | 2026-04-15 A | 2026-04-15 A | TAEXTSCL070001 | 100% |  |
| TAEXTSCL070003 |  | Install Pipes & Fittings | 5d | 2026-04-15 A | 2026-04-20 A | TAEXTSCL070002 | 100% |  |
| TAEXTSCL070004 |  | Backfilling Works for Trench | 9d | 2026-04-21 A | 2026-04-30 A | TAEXTSCL070003 | 100% |  |
| TAEXTSCL0700011 |  | Excavation works for Trench Part 01 | 4d | 2026-06-21 | 2026-06-24 | TAEXTSCL0100011 |  | 54d |
| TAEXTSCL0700021 |  | Bedding Works Part 01 | 1d | 2027-01-17 | 2027-01-17 | TAEXTSCL070002, TAEXTSCL0700011, TAEXSWCL070001, TAEXPTCL070002 |  | 52d |
| TAEXTSCL0700031 |  | Install Pipes & Fittings Part 01 | 5d | 2027-01-18 | 2027-01-23 | TAEXTSCL0700021, TAEXTSCL070003 |  | 52d |
| TAEXTSCL0700041 |  | Backfilling Works for Trench Part 01 | 8d | 2027-01-24 | 2027-02-01 | TAEXTSCL0700031, TAEXTSCL070004 |  | 67d |
| TAEXTSCL070005 |  | Install Valves with fittings | 4d | 2027-05-08 | 2027-05-11 | TAEXTSCL0700041 FF, TAEXTSCL090005, TAEXTSCL060005 |  | 54d |
| TAEXTSCL070006 |  | Valve Chamber works | 15d | 2027-05-12 | 2027-05-29 | TAEXTSCL070005 |  | 54d |
| TAEXTSCL070007 |  | Inspection Test | 4d | 2027-05-30 | 2027-06-02 | TAEXTSCL070006 |  | 54d |
|  | 15 | **Sewerage Networks** |  | 2026-12-15 | 2027-03-02 |  |  |  |
| TAEXSWCL070001 |  | Excavation works for Trench | 28d | 2026-12-15 | 2027-01-16 | TAEXSWCC0100011 |  | 2d |
| TAEXSWCL070002 |  | Bedding Works | 3d | 2027-01-17 | 2027-01-19 | TAEXSWCL070001, TAEXPTCL070002 |  | 128d |
| TAEXSWCL070003 |  | Install GRP Pipes & Fittings | 8d | 2027-01-20 | 2027-01-28 | TAEXSWCL070002 |  | 128d |
| TAEXSWCL070004 |  | Backfilling Works for Trench | 14d | 2027-01-31 | 2027-02-15 | TAEXSWCL070003 FF+15d |  | 128d |
| TAEXSWCL070005 |  | Manhole Installation with backfilling | 12d | 2027-02-14 | 2027-02-27 | TAEXSWCL070004 FF+10d, TAEXSWCL070003, TAPQDVSW00021 |  | 128d |
| TAEXSWCL070006 |  | Leakage Test | 3d | 2027-02-28 | 2027-03-02 | TAEXSWCL070005 |  | 128d |
|  | 5 | **Storm Networks** |  | 2026-02-15 | 2027-02-22 |  |  |  |
| TAEXSTCL070001 |  | Excavation works for Trench | 6d | 2026-02-15 A | 2026-02-21 A | TAEXSTCL030001 | 100% |  |
| TAEXSTCL070002 |  | Bedding Works | 1d | 2026-03-05 A | 2026-03-06 A | TAEXSTCL070001 | 100% |  |
| TAEXSTCL070003 |  | Install GRP Pipes & Fittings | 6d | 2026-03-14 A | 2026-03-19 A | TAEXSTCL070002 | 100% |  |
| TAEXSTCL070004 |  | Backfilling Works for Trench | 10d | 2026-04-04 A | 2026-04-14 A | TAEXSTCL070003 | 100% |  |
| TAEXSTCL070005 |  | Manhole Installation with backfilling | 10d | 2026-04-12 A | 2026-04-22 A | TAEXSTCL070004 FF+10d, TAEXSTCL070003 | 100% |  |

| ID | WBS | Task | Duration | Start | Finish | Predecessors | Complete | Total float |
| --- | --- | --- | --- | --- | --- | --- | --- | --- |
| TAEXSTCL0700011 |  | Excavation works for Trench Part 01 | 4d | 2026-08-15 | 2026-08-18 | TAEXSTCL070001, TAEXSTCU21000611 |  | 52d |
| TAEXSTCL0700021 |  | Bedding Works Part 01 | 1d | 2026-08-19 | 2026-08-19 | TAEXSTCL070002, TAEXSTCL0700011 |  | 118d |
| TAEXSTCL0700031 |  | Install GRP Pipes & Fittings Part 01 | 5d | 2026-08-20 | 2026-08-25 | TAEXSTCL070003, TAEXSTCL070003 FF, TAEXSTCL0700021 |  | 118d |
| TAEXSTCL0700041 |  | Backfilling Works for Trench Part 01 | 8d | 2026-09-03 | 2026-09-12 | TAEXSTCL0700031 FF+15d, TAEXSTCL070004 |  | 118d |
| TAEXSTCL0700051 |  | Manhole Installation with backfilling Part 01 | 5d | 2026-10-20 | 2026-10-25 | TAEXSTCL0700041 FF+10d, TAEXSTCL070005, TAPQDVST00061 |  | 91d |
| TAEXSTCL070006 |  | Install Catch Basin with UPVC Pipes & Fittings | 10d | 2027-02-08 | 2027-02-18 | TAEXSTCL0700051, TAEXSTCC020006 |  | 1d |
| TAEXSTCL070007 |  | Leakage Test | 3d | 2027-02-20 | 2027-02-22 | TAEXSTCL070006, TAEXSTCL0700051 |  | 1d |
|  | 6 | **Local Road 08** |  | 2026-01-12 | 2027-07-31 |  |  |  |
|  | 12 | **Road Works** |  | 2026-01-12 | 2027-07-31 |  |  |  |
| TAEXRDCL080001 |  | Road Excavation and Disposal | 8d | 2026-01-12 A | 2026-01-20 A | TAEXRDCL060001 | 100% |  |
| TAEXRDCL080002 |  | Backfilling Works for Road | 8d | 2026-01-29 A | 2026-02-07 A | TAEXRDCL080001 | 100% |  |
| TAEXRDCL080003 |  | Subgrade Works | 4d | 2026-02-08 A | 2026-02-11 A | TAEXRDCL080002 | 100% |  |
| TAEXRDCL080000 |  | Asphalt Milling and Deisposal | 4d | 2027-03-14 | 2027-03-17 | TAEXRDCL060000 |  | 2d |
| TAEXRDCL0800011 |  | Road Excavation and Disposal Part 01 | 5d | 2027-03-18 | 2027-03-23 | TAEXRDCL080000 |  | 2d |
| TAEXRDCL0800021 |  | Backfilling Works for Road Part 01 | 7d | 2027-03-24 | 2027-03-31 | TAEXRDCL080002, TAEXRDCL0800011 |  | 2d |
| TAEXRDCL0800031 |  | Subgrade Works Part 01 | 4d | 2027-04-01 | 2027-04-05 | TAEXRDCL080003, TAEXRDCL0800021 |  | 2d |
| TAEXRDCL080004 |  | ABC aggregate Base Course Works | 4d | 2027-04-06 | 2027-04-10 | TAEXSTCL080007, TAEXRDCL0800031, TAPQDVRD00011 |  | 2d |
| TAEXRDCL080005 |  | MBC1 layer | 1d | 2027-04-11 | 2027-04-11 | TAEXRDCL080004 |  | 2d |
| TAEXRDCL080006 |  | BBC Base Course | 4d | 2027-04-12 | 2027-04-15 | TAEXRDCL080005 |  | 2d |
| TAEXRDCL080008 |  | Precast Concret Kerps | 14d | 2027-06-13 | 2027-06-28 | TAEXRDCL080006, TAEXRDCL070008 |  | 0d |
| TAEXRDCL080007 |  | BWC Asphalt Wearing Course with RC | 1d | 2027-06-29 | 2027-06-29 | TAEXRDCL080006, TAEXRDCL080008 |  | 2d |
| TAEXRDCL080009 |  | Precast Interlock Works | 17d | 2027-06-30 | 2027-07-19 | TAEXRDCL080008, TAEXRDCL080007 |  | 2d |
| TAEXRDCL080010 |  | Stone Paving works | 7d | 2027-07-20 | 2027-07-27 | TAEXRDCL080009 |  | 2d |
| TAEXRDCL080011 |  | Road Marking | 1d | 2027-07-28 | 2027-07-28 | TAEXRDCL080010 |  | 2d |
| TAEXRDCL080012 |  | Traffic Sinage | 2d | 2027-07-29 | 2027-07-31 | TAEXRDCL080011 |  | 2d |
|  | 1 | **Electrical Works** |  | 2027-04-24 | 2027-07-05 |  |  |  |
| TAEXELCL080001 |  | Trench Cut off | 10d | 2027-04-24 | 2027-05-04 | TAEXELCL070001 |  | 0d |
| TAEXELCL080002 |  | Drawpit and PVC Pipes Installation | 5d | 2027-05-05 | 2027-05-10 | TAEXELCL080001, TAPQDVEL0005 |  | 47d |
| TAEXELCL080003 |  | Road Crossing Ducts | 2d | 2027-05-11 | 2027-05-12 | TAEXELCL080002 |  | 47d |
| TAEXELCL080006 |  | Poles RC Foundation | 4d | 2027-05-11 | 2027-05-15 | TAEXELCL080002, TAPQDVEL0005 |  | 61d |
| TAEXELCL080004 |  | Trench Backfilling | 14d | 2027-05-13 | 2027-05-29 | TAEXELCL080003 |  | 47d |
| TAEXELCL080008 |  | Lighting Pole Installation with Luminares | 6d | 2027-05-16 | 2027-05-22 | TAEXELCL080006 |  | 61d |
| TAEXELCL080005 |  | Cables Pulling | 3d | 2027-05-30 | 2027-06-01 | TAEXELCL080002, TAEXELCL080003, TAEXELCL080004 |  | 47d |
| TAEXELCL080009 |  | Install Substation & RMU | 9d | 2027-06-02 | 2027-06-12 | TAEXELCL080005, TAPQDVEL0004 |  | 50d |
| TAEXELCL080007 |  | Earthing cables | 2d | 2027-07-04 | 2027-07-05 | TAEXELCL080006, TAEXELCL080005, TAEXELCL070007 |  | 20d |
|  | 2 | **Telecommunication Works** |  | 2027-03-28 | 2027-06-23 |  |  |  |
| TAEXTCCL080001 |  | Trench Cut off | 10d | 2027-03-28 | 2027-04-07 | TAEXTCCL070001 |  | 45d |
| TAEXTCCL080002 |  | Drawpit and PVC Pipes Installation | 5d | 2027-05-31 | 2027-06-05 | TAEXTCCL080001, TAEXTCCL070002 |  | 0d |
| TAEXTCCL080003 |  | Road Crossing Ducts | 2d | 2027-06-06 | 2027-06-07 | TAEXTCCL080002 |  | 32d |
| TAEXTCCL080004 |  | Trench Backfilling | 14d | 2027-06-08 | 2027-06-23 | TAEXTCCL080003 |  | 32d |
|  | 19 | **CCTV Works** |  | 2027-04-29 | 2027-06-21 |  |  |  |
| TAEXCCCL080001 |  | Pipe Installation with manhole | 8d | 2027-04-29 | 2027-05-08 | TAEXCCCL070001 |  | 0d |
| TAEXCCCL080002 |  | CCTV Swiches Lighting panels Installation | 13d | 2027-05-09 | 2027-05-23 | TAEXCCCL080001 |  | 44d |
| TAEXCCCL080003 |  | Cable laying and connected with Panels | 10d | 2027-05-24 | 2027-06-03 | TAEXCCCL080002 |  | 44d |
| TAEXCCCL080004 |  | Pole Installation with IP Outdoor CCTV POE Camera | 15d | 2027-06-05 | 2027-06-21 | TAEXCCCL080003 |  | 44d |
|  | 3 | **Potable Networks** |  | 2026-10-17 | 2027-07-13 |  |  |  |
| TAEXPTCL080001 |  | Excavation works for Trench | 8d | 2026-10-17 | 2026-10-25 | TAEXPTCL060001 |  | 1d |
| TAEXPTCL080002 |  | Bedding Works | 2d | 2026-10-26 | 2026-10-27 | TAEXPTCL080001 |  | 125d |
| TAEXPTCL080003 |  | Install Pipes & Fittings | 8d | 2027-03-29 | 2027-04-06 | TAEXPTCL080002, TAEXPTCL070003 |  | 29d |
| TAEXPTCL080004 |  | Backfilling Works for Trench | 15d | 2027-04-07 | 2027-04-24 | TAEXPTCL080003 |  | 29d |
| TAEXPTCL080006 |  | Install fire hydrent | 6d | 2027-04-26 | 2027-05-02 | TAEXPTCL080003, TAEXPTCL060006 |  | 28d |
| TAEXPTCL080005 |  | Install Valves with fittings | 4d | 2027-05-01 | 2027-05-04 | TAEXPTCL080004 FF, TAPQDVPT00021, TAEXPTCL060005 |  | 20d |
| TAEXPTCL080007 |  | Valve Chamber works | 16d | 2027-06-21 | 2027-07-08 | TAEXPTCL080006, TAEXPTCL070007 |  | 1d |
| TAEXPTCL080008 |  | Inspection Test | 4d | 2027-07-10 | 2027-07-13 | TAEXPTCL080007 |  | 15d |
|  | 4 | **TSE Networks** |  | 2026-08-20 | 2027-07-18 |  |  |  |
| TAEXTSCL080001 |  | Excavation works for Trench | 8d | 2026-08-20 | 2026-08-29 | TAEXTSCL060001 |  | 54d |
| TAEXTSCL080002 |  | Bedding Works | 2d | 2026-10-28 | 2026-10-29 | TAEXTSCL080001, TAEXPTCL080002 |  | 125d |
| TAEXTSCL080003 |  | Install Pipes & Fittings | 8d | 2027-01-24 | 2027-02-01 | TAEXTSCL080002, TAEXTSCL0700031 |  | 52d |
| TAEXTSCL080004 |  | Backfilling Works for Trench | 15d | 2027-02-02 | 2027-02-18 | TAEXTSCL080003 |  | 118d |
| TAEXTSCL080005 |  | Install Valves with fittings | 4d | 2027-02-15 | 2027-02-18 | TAEXTSCL080004 FF |  | 118d |
| TAEXTSCL080006 |  | Valve Chamber works | 16d | 2027-02-20 | 2027-03-09 | TAEXTSCL080005 |  | 123d |
| TAEXTSCL080007 |  | Inspection Test | 4d | 2027-07-14 | 2027-07-18 | TAEXTSCL080006, TAEXPTCL080008 |  | 15d |
|  | 16 | **Sewerage Networks** |  | 2026-02-19 | 2027-03-07 |  |  |  |
| TAEXSWCL080001 |  | Excavation works for Trench | 8d | 2026-02-19 A | 2026-02-28 A | TAEXSWCL090001 | 100% |  |
| TAEXSWCL080002 |  | Bedding Works | 2d | 2026-03-31 A | 2026-04-01 A | TAEXSWCL080001 | 100% |  |
| TAEXSWCL080003 |  | Install GRP Pipes & Fittings | 6d | 2026-04-01 A | 2026-04-07 A | TAEXSWCL080002 | 100% |  |
| TAEXSWCL080004 |  | Backfilling Works for Trench | 6d | 2026-04-04 A | 2026-04-09 A | TAEXSWCL080003 | 100% |  |
| TAEXSWCL080005 |  | Manhole Installation with backfilling | 5d | 2026-04-11 A | 2026-04-15 A | TAEXSWCL080003 | 100% |  |
| TAEXSWCL0800011 |  | Excavation works for Trench Part 01 | 10d | 2027-01-17 | 2027-01-27 | TAEXSWCL080001, TAEXSWCL070001 |  | 2d |
| TAEXSWCL0800021 |  | Bedding Works Part 01 | 1d | 2027-01-28 | 2027-01-28 | TAEXSWCL0800011 |  | 124d |

| ID | WBS | Task | Duration | Start | Finish | Predecessors | Complete | Total float |
| --- | --- | --- | --- | --- | --- | --- | --- | --- |
| TAEXSWCL0800031 |  | Install GRP Pipes & Fittings Part 01 | 4d | 2027-01-30 | 2027-02-02 | TAEXSWCL080003, TAEXSWCL0800021 |  | 124d |
| TAEXSWCL0800041 |  | Backfilling Works for Trench Part 01 | 10d | 2027-02-09 | 2027-02-20 | TAEXSWCL0800031 FF+15d, TAEXSWCL080004 |  | 124d |
| TAEXSWCL0800051 |  | Manhole Installation with backfilling Part 01 | 10d | 2027-02-21 | 2027-03-03 | TAEXSWCL0800041 FF+10d, TAEXSWCL080005, TAPQDVSW00021 |  | 124d |
| TAEXSWCL080006 |  | Leakage Test | 3d | 2027-03-04 | 2027-03-07 | TAEXSWCL0800051 |  | 124d |
|  | 5 | **Storm Networks** |  | 2026-02-15 | 2027-01-16 |  |  |  |
| TAEXSTCL080001 |  | Excavation works for Trench | 10d | 2026-02-15 A | 2026-02-25 A | TAEXSTCL070001 | 100% |  |
| TAEXSTCL080002 |  | Bedding Works | 2d | 2026-03-05 A | 2026-03-07 A | TAEXSTCL080001 | 100% |  |
| TAEXSTCL080003 |  | Install GRP Pipes & Fittings | 7d | 2026-04-01 A | 2026-04-08 A | TAEXSTCL080002 | 100% |  |
| TAEXSTCL080004 |  | Backfilling Works for Trench | 6d | 2026-04-04 A | 2026-04-09 A | TAEXSTCL080003 | 100% |  |
| TAEXSTCL080005 |  | Manhole Installation with backfilling | 5d | 2026-04-11 A | 2026-04-15 A | TAEXSTCL080003 | 100% |  |
| TAEXSTCL0800011 |  | Excavation works for Trench Part 01 | 5d | 2026-08-30 | 2026-09-03 | TAEXSTCL0700011, TAEXSTCL100001 |  | 43d |
| TAEXSTCL0800021 |  | Bedding Works Part 01 | 1d | 2026-09-05 | 2026-09-05 | TAEXSTCL080002, TAEXSTCL0800011 |  | 43d |
| TAEXSTCL0800031 |  | Install GRP Pipes & Fittings Part 01 | 7d | 2026-09-06 | 2026-09-13 | TAEXSTCL080003, TAEXSTCL0800021 |  | 43d |
| TAEXSTCL0800041 |  | Backfilling Works for Trench Part 01 | 7d | 2026-09-23 | 2026-09-30 | TAEXSTCL0800031 FF+15d, TAEXSTCL080004 |  | 43d |
| TAEXSTCL0800051 |  | Manhole Installation with backfilling Part 01 | 10d | 2026-10-20 | 2026-10-31 | TAEXSTCL0800041 FF+10d, TAEXSTCL080005, TAPQDVST00061 |  | 27d |
| TAEXSTCL080006 |  | Install Catch Basin with UPVC Pipes & Fittings | 11d | 2026-12-02 | 2026-12-14 | TAEXSTCL040006, TAEXSTCL0800051 |  | 0d |
| TAEXSTCL080007 |  | Leakage Test | 3d | 2027-01-13 | 2027-01-16 | TAEXSTCL080006 FS+25d, TAEXSTCL0800051 |  | 70d |
|  | 3 | **Local Road 09** |  | 2025-10-20 | 2027-08-02 |  |  |  |
|  | 12 | **Road Works** |  | 2025-10-20 | 2027-08-02 |  |  |  |
| TAEXRDCL090001 |  | Road Excavation and Disposal | 25d | 2025-10-20 A | 2025-11-17 A | TAEXRDCL030001 | 100% |  |
| TAEXRDCL090002 |  | Backfilling Works for Road | 2d | 2025-12-15 A | 2025-12-16 A | TAEXRDCL090001 | 100% |  |
| TAEXRDCL090003 |  | Subgrade Works | 15d | 2026-01-04 A | 2026-01-20 A | TAEXRDCL090002 | 100% |  |
| TAEXRDCL090004 |  | ABC aggregate Base Course Works | 5d | 2027-02-20 | 2027-02-24 | TAEXRDCL090003, TAEXSTCL090007 FS+45d, TAPQDVRD00011 |  | 42d |
| TAEXRDCL090005 |  | MBC1 layer | 1d | 2027-02-25 | 2027-02-25 | TAEXRDCL090004 |  | 42d |
| TAEXRDCL090006 |  | BBC Base Course | 2d | 2027-02-27 | 2027-02-28 | TAEXRDCL090005 |  | 42d |
| TAEXRDCL090008 |  | Precast Concret Kerps | 13d | 2027-06-29 | 2027-07-13 | TAEXRDCL090006, TAEXRDCL080008 |  | 0d |
| TAEXRDCL090007 |  | BWC Asphalt Wearing Course with RC | 1d | 2027-07-14 | 2027-07-14 | TAEXRDCL090006, TAEXRDCL090008 |  | 0d |
| TAEXRDCL090009 |  | Precast Interlock Works | 12d | 2027-07-15 | 2027-07-28 | TAEXRDCL090008, TAEXRDCL090007 |  | 0d |
| TAEXRDCL090010 |  | Stone Paving works | 2d | 2027-07-29 | 2027-07-31 | TAEXRDCL090009 |  | 0d |
| TAEXRDCL090011 |  | Road Marking | 1d | 2027-08-01 | 2027-08-01 | TAEXRDCL090010 |  | 0d |
| TAEXRDCL090012 |  | Traffic Sinage | 1d | 2027-08-02 | 2027-08-02 | TAEXRDCL090011 |  | 0d |
|  | 1 | **Electrical Works** |  | 2027-05-05 | 2027-07-07 |  |  |  |
| TAEXELCL090001 |  | Trench Cut off | 11d | 2027-05-05 | 2027-05-17 | TAEXELCL080001 |  | 0d |
| TAEXELCL090002 |  | Drawpit and PVC Pipes Installation | 9d | 2027-05-18 | 2027-05-27 | TAEXELCL090001, TAPQDVEL0005 |  | 39d |
| TAEXELCL090003 |  | Road Crossing Ducts | 2d | 2027-05-29 | 2027-05-30 | TAEXELCL090002 |  | 39d |
| TAEXELCL090006 |  | Poles RC Foundation | 3d | 2027-05-29 | 2027-05-31 | TAEXELCL090002, TAPQDVEL0005 |  | 49d |
| TAEXELCL090004 |  | Trench Backfilling | 10d | 2027-05-31 | 2027-06-10 | TAEXELCL090003 |  | 39d |
| TAEXELCL090008 |  | Lighting Pole Installation with Luminares | 4d | 2027-06-01 | 2027-06-05 | TAEXELCL090006 |  | 49d |
| TAEXELCL090005 |  | Cables Pulling | 2d | 2027-06-12 | 2027-06-13 | TAEXELCL090002, TAEXELCL090003, TAEXELCL090004, TAEXELCL090004 FF |  | 39d |
| TAEXELCL090007 |  | Earthing cables | 2d | 2027-07-06 | 2027-07-07 | TAEXELCL090006, TAEXELCL090005, TAEXELCL090005 FF, TAEXELCL080007 |  | 20d |
|  | 2 | **Telecommunication Works** |  | 2027-04-08 | 2027-06-23 |  |  |  |
| TAEXTCCL090001 |  | Trench Cut off | 5d | 2027-04-08 | 2027-04-13 | TAEXTCCL080001 |  | 45d |
| TAEXTCCL090002 |  | Drawpit and PVC Pipes Installation | 4d | 2027-06-06 | 2027-06-09 | TAEXTCCL090001, TAEXTCCL080002 |  | 0d |
| TAEXTCCL090003 |  | Road Crossing Ducts | 2d | 2027-06-10 | 2027-06-12 | TAEXTCCL090002 |  | 32d |
| TAEXTCCL090004 |  | Trench Backfilling | 10d | 2027-06-13 | 2027-06-23 | TAEXTCCL090003 |  | 32d |
|  | 20 | **CCTV Works** |  | 2027-05-09 | 2027-06-20 |  |  |  |
| TAEXCCCL090001 |  | Pipe Installation with manhole | 7d | 2027-05-09 | 2027-05-16 | TAEXCCCL080001 |  | 0d |
| TAEXCCCL090002 |  | CCTV Swiches Lighting panels Installation | 10d | 2027-05-17 | 2027-05-27 | TAEXCCCL090001 |  | 45d |
| TAEXCCCL090003 |  | Cable laying and connected with Panels | 8d | 2027-05-29 | 2027-06-06 | TAEXCCCL090002 |  | 45d |
| TAEXCCCL090004 |  | Pole Installation with IP Outdoor CCTV POE Camera | 12d | 2027-06-07 | 2027-06-20 | TAEXCCCL090003 |  | 45d |
|  | 3 | **Potable Networks** |  | 2026-03-23 | 2027-07-28 |  |  |  |
| TAEXPTCL090001 |  | Excavation works for Trench | 4d | 2026-03-23 A | 2026-03-26 A | TAEXPTCL010001 | 100% |  |
| TAEXPTCL090002 |  | Bedding Works | 1d | 2026-04-14 A | 2026-04-14 A | TAEXPTCL090001 | 100% |  |
| TAEXPTCL090003 |  | Install Pipes & Fittings | 2d | 2026-04-16 A | 2026-04-18 A | TAEXPTCL090002 | 100% |  |
| TAEXPTCL090004 |  | Backfilling Works for Trench | 9d | 2026-04-21 A | 2026-04-30 A | TAEXPTCL090003 | 100% |  |
| TAEXPTCL0900011 |  | Excavation works for Trench Part 01 | 3d | 2026-09-17 | 2026-09-20 | TAEXPTCL090001, TAEXPTCL0100011 |  | 1d |
| TAEXPTCL0900021 |  | Bedding Works Part 01 | 6d | 2026-09-21 | 2026-09-27 | TAEXPTCL0900011 |  | 155d |
| TAEXPTCL0900031 |  | Install Pipes & Fittings Part 01 | 6d | 2026-09-28 | 2026-10-04 | TAEXPTCL0900021 |  | 155d |
| TAEXPTCL0900041 |  | Backfilling Works for Trench Part 01 | 10d | 2027-02-23 | 2027-03-06 | TAEXPTCL090004, TAEXPTCL0900031, TAEXTSCL090004 |  | 52d |
| TAEXPTCL090006 |  | Install fire hydrent | 6d | 2027-04-04 | 2027-04-10 | TAEXPTCL0900031, TAEXPTCL070006 |  | 19d |
| TAEXPTCL090005 |  | Install Valves with fittings | 3d | 2027-04-13 | 2027-04-15 | TAEXPTCL0900041, TAPQDVPT00021, TAEXPTCL070005 |  | 20d |
| TAEXPTCL090007 |  | Valve Chamber works | 14d | 2027-07-10 | 2027-07-25 | TAEXPTCL090006, TAEXPTCL080007 |  | 1d |
| TAEXPTCL090008 |  | Inspection Test | 3d | 2027-07-26 | 2027-07-28 | TAEXPTCL090007 |  | 6d |
|  | 4 | **TSE Networks** |  | 2026-04-26 | 2027-05-26 |  |  |  |
| TAEXTSCL090001 |  | Excavation works for Trench | 4d | 2026-04-26 A | 2026-04-29 A | TAEXTSCL010001 | 100% |  |
| TAEXTSCL0900011 |  | Excavation works for Trench Part 01 | 12d | 2026-06-25 | 2026-07-08 | TAEXTSCL090001, TAEXTSCL0700011 |  | 54d |
| TAEXTSCL090002 |  | Bedding Works | 2d | 2026-07-09 | 2026-07-11 | TAEXTSCL0900011 |  | 100d |
| TAEXTSCL090003 |  | Install Pipes & Fittings | 6d | 2027-02-02 | 2027-02-08 | TAEXTSCL090002, TAEXTSCL080003, TAEXPTCL0900031 |  | 52d |
| TAEXTSCL090004 |  | Backfilling Works for Trench | 12d | 2027-02-09 | 2027-02-22 | TAEXTSCL090003 |  | 52d |
| TAEXTSCL090005 |  | Install Valves with fittings | 3d | 2027-05-04 | 2027-05-06 | TAEXTSCL090004 FF, TAEXTSCL060005 |  | 54d |

| ID | WBS | Task | Duration | Start | Finish | Predecessors | Complete | Total float |
| --- | --- | --- | --- | --- | --- | --- | --- | --- |
| TAEXTSCL090006 |  | Valve Chamber works | 14d | 2027-05-08 | 2027-05-23 | TAEXTSCL090005 |  | 60d |
| TAEXTSCL090007 |  | Inspection Test | 3d | 2027-05-24 | 2027-05-26 | TAEXTSCL090006 |  | 60d |
|  | 17 | **Sewerage Networks** |  | 2026-02-08 | 2027-04-12 |  |  |  |
| TAEXSWCL090001 |  | Excavation works for Trench | 43d | 2026-02-08 A | 2026-03-29 A | TAEXSWCL050001 | 100% |  |
| TAEXSWCL090002 |  | Bedding Works | 4d | 2026-03-29 A | 2026-04-01 A | TAEXSWCL090001 | 100% |  |
| TAEXSWCL090003 |  | Install GRP Pipes & Fittings | 21d | 2026-04-01 A | 2026-04-25 A | TAEXSWCL090002 | 100% |  |
| TAEXSWCL090004 |  | Backfilling Works for Trench | 10d | 2026-04-05 A | 2026-04-15 A | TAEXSWCL090003 FF+15d | 100% |  |
| TAEXSWCL090005 |  | Manhole Installation with backfilling | 6d | 2026-04-11 A | 2026-04-17 A | TAEXSWCL090003 | 100% |  |
| TAEXSWCL0900041 |  | Backfilling Works for Trench Part 01 | 8d | 2027-03-31 | 2027-04-08 | TAEXSWCL090004, TAEXSWCL0500041 |  | 93d |
| TAEXSWCL0900051 |  | Manhole Installation with backfilling Part 01 | 6d | 2027-04-03 | 2027-04-08 | TAEXSWCL0900041 FF, TAEXSWCL090005, TAPQDVSW00021 |  | 93d |
| TAEXSWCL090006 |  | Leakage Test | 3d | 2027-04-10 | 2027-04-12 | TAEXSWCL0900051 |  | 93d |
|  | 5 | **Storm Networks** |  | 2026-02-10 | 2026-12-28 |  |  |  |
| TAEXSTCL090001 |  | Excavation works for Trench | 89d | 2026-02-10 A | 2026-05-24 A | TAEXSTCL080001 | 100% |  |
| TAEXSTCL090002 |  | Bedding Works | 1d | 2026-05-07 A | 2026-05-07 A | TAEXSTCL090001 | 100% |  |
| TAEXSTCL0900021 |  | Bedding Works Part 01 | 1d | 2026-09-06 | 2026-09-06 | TAEXSTCL090002, TAEXSTCL0800021, TAEXTSCL090002 |  | 52d |
| TAEXSTCL090003 |  | Install GRP Pipes & Fittings | 8d | 2026-09-07 | 2026-09-15 | TAEXSTCL0900021 |  | 52d |
| TAEXSTCL090004 |  | Backfilling Works for Trench | 13d | 2026-09-19 | 2026-10-03 | TAEXSTCL090003 FF+15d |  | 52d |
| TAEXSTCL090005 |  | Manhole Installation with backfilling | 12d | 2026-10-20 | 2026-11-02 | TAEXSTCL090004 FF+10d, TAEXSTCL090003, TAPQDVST00061 |  | 36d |
| TAEXSTCL090006 |  | Install Catch Basin with UPVC Pipes & Fittings | 9d | 2026-12-15 | 2026-12-24 | TAEXSTCL090005, TAEXSTCU280006, TAEXSTCL080006 |  | 0d |
| TAEXSTCL090007 |  | Leakage Test | 3d | 2026-12-26 | 2026-12-28 | TAEXSTCL090005, TAEXSTCL090006 |  | 42d |
|  | 4 | **Upgrade Local 06** |  | 2027-06-02 | 2027-07-20 |  |  |  |
|  | 22 | **Electrical Works** |  | 2027-06-10 | 2027-07-20 |  |  |  |
| TAEXELCU060001 |  | Trench Cut off | 10d | 2027-06-10 | 2027-06-21 | TAEXELCU140001 |  | 0d |
| TAEXELCU060002 |  | Drawpit and PVC Pipes Installation | 6d | 2027-06-22 | 2027-06-28 | TAEXELCU060001, TAPQDVEL0005 |  | 11d |
| TAEXELCU060003 |  | Road Crossing Ducts | 3d | 2027-06-29 | 2027-07-01 | TAEXELCU060002 |  | 11d |
| TAEXELCU060006 |  | Poles RC Foundation | 4d | 2027-06-29 | 2027-07-03 | TAEXELCU060002, TAPQDVEL0005 |  | 19d |
| TAEXELCU060004 |  | Trench Backfilling | 10d | 2027-07-03 | 2027-07-13 | TAEXELCU060003 |  | 11d |
| TAEXELCU060008 |  | Lighting Pole Installation with Luminares | 6d | 2027-07-04 | 2027-07-10 | TAEXELCU060006 |  | 19d |
| TAEXELCU060005 |  | Cables Pulling | 4d | 2027-07-14 | 2027-07-18 | TAEXELCU060002, TAEXELCU060003, TAEXELCU060004 |  | 11d |
| TAEXELCU060007 |  | Earthing cables | 2d | 2027-07-19 | 2027-07-20 | TAEXELCU060006, TAEXELCU060005, TAEXELCL090007 |  | 11d |
|  | 23 | **CCTV Works** |  | 2027-06-02 | 2027-07-14 |  |  |  |
| TAEXCCCU060001 |  | Pipe Installation with manhole | 8d | 2027-06-02 | 2027-06-10 | TAEXCCCU140001 |  | 0d |
| TAEXCCCU060002 |  | CCTV Swiches Lighting panels Installation | 10d | 2027-06-12 | 2027-06-22 | TAEXCCCU060001 |  | 24d |
| TAEXCCCU060003 |  | Cable laying and connected with Panels | 9d | 2027-06-23 | 2027-07-03 | TAEXCCCU060002 |  | 24d |
| TAEXCCCU060004 |  | Pole Installation with IP Outdoor CCTV POE Camera | 10d | 2027-07-04 | 2027-07-14 | TAEXCCCU060003 |  | 24d |
|  | 7 | **Upgrade Local 07** |  | 2027-06-12 | 2027-07-24 |  |  |  |
|  | 23 | **Electrical Works** |  | 2027-06-22 | 2027-07-24 |  |  |  |
| TAEXELCU070001 |  | Trench Cut off | 7d | 2027-06-22 | 2027-06-29 | TAEXELCU060001 |  | 0d |
| TAEXELCU070002 |  | Drawpit and PVC Pipes Installation | 5d | 2027-06-30 | 2027-07-05 | TAEXELCU070001, TAPQDVEL0005 |  | 10d |
| TAEXELCU070003 |  | Road Crossing Ducts | 3d | 2027-07-06 | 2027-07-08 | TAEXELCU070002 |  | 10d |
| TAEXELCU070006 |  | Poles RC Foundation | 3d | 2027-07-06 | 2027-07-08 | TAEXELCU070002, TAPQDVEL0005 |  | 15d |
| TAEXELCU070004 |  | Trench Backfilling | 8d | 2027-07-10 | 2027-07-18 | TAEXELCU070003 |  | 10d |
| TAEXELCU070008 |  | Lighting Pole Installation with Luminares | 5d | 2027-07-10 | 2027-07-14 | TAEXELCU070006 |  | 15d |
| TAEXELCU070005 |  | Cables Pulling | 3d | 2027-07-19 | 2027-07-21 | TAEXELCU070002, TAEXELCU070003, TAEXELCU070004 |  | 10d |
| TAEXELCU070007 |  | Earthing cables | 2d | 2027-07-22 | 2027-07-24 | TAEXELCU070006, TAEXELCU070005, TAEXELCU060007 |  | 10d |
|  | 24 | **CCTV Works** |  | 2027-06-12 | 2027-07-24 |  |  |  |
| TAEXCCCU070001 |  | Pipe Installation with manhole | 8d | 2027-06-12 | 2027-06-20 | TAEXCCCU060001 |  | 0d |
| TAEXCCCU070002 |  | CCTV Swiches Lighting panels Installation | 10d | 2027-06-21 | 2027-07-01 | TAEXCCCU070001 |  | 16d |
| TAEXCCCU070003 |  | Cable laying and connected with Panels | 9d | 2027-07-03 | 2027-07-12 | TAEXCCCU070002 |  | 16d |
| TAEXCCCU070004 |  | Pole Installation with IP Outdoor CCTV POE Camera | 10d | 2027-07-13 | 2027-07-24 | TAEXCCCU070003 |  | 16d |
|  | 8 | **Upgrade Local 08** |  | 2027-06-21 | 2027-08-02 |  |  |  |
|  | 24 | **Electrical Works** |  | 2027-06-30 | 2027-08-01 |  |  |  |
| TAEXELCU080001 |  | Trench Cut off | 7d | 2027-06-30 | 2027-07-07 | TAEXELCU070001 |  | 0d |
| TAEXELCU080002 |  | Drawpit and PVC Pipes Installation | 5d | 2027-07-08 | 2027-07-13 | TAEXELCU080001, TAPQDVEL0005 |  | 5d |
| TAEXELCU080003 |  | Road Crossing Ducts | 3d | 2027-07-14 | 2027-07-17 | TAEXELCU080002 |  | 5d |
| TAEXELCU080006 |  | Poles RC Foundation | 3d | 2027-07-14 | 2027-07-17 | TAEXELCU080002, TAPQDVEL0005 |  | 8d |
| TAEXELCU080004 |  | Trench Backfilling | 8d | 2027-07-18 | 2027-07-26 | TAEXELCU080003 |  | 5d |
| TAEXELCU080008 |  | Lighting Pole Installation with Luminares | 5d | 2027-07-18 | 2027-07-22 | TAEXELCU080006 |  | 8d |
| TAEXELCU080005 |  | Cables Pulling | 3d | 2027-07-27 | 2027-07-29 | TAEXELCU080002, TAEXELCU080003, TAEXELCU080004 |  | 5d |
| TAEXELCU080007 |  | Earthing cables | 2d | 2027-07-31 | 2027-08-01 | TAEXELCU080006, TAEXELCU080005, TAEXELCU070007 |  | 5d |
|  | 25 | **CCTV Works** |  | 2027-06-21 | 2027-08-02 |  |  |  |
| TAEXCCCU080001 |  | Pipe Installation with manhole | 8d | 2027-06-21 | 2027-06-29 | TAEXCCCU070001 |  | 0d |
| TAEXCCCU080002 |  | CCTV Swiches Lighting panels Installation | 10d | 2027-06-30 | 2027-07-11 | TAEXCCCU080001 |  | 8d |
| TAEXCCCU080003 |  | Cable laying and connected with Panels | 9d | 2027-07-12 | 2027-07-21 | TAEXCCCU080002 |  | 8d |
| TAEXCCCU080004 |  | Pole Installation with IP Outdoor CCTV POE Camera | 10d | 2027-07-22 | 2027-08-02 | TAEXCCCU080003 |  | 8d |
|  | 9 | **Upgrade Local 09** |  | 2027-06-30 | 2027-08-11 |  |  |  |
|  | 26 | **Electrical Works** |  | 2027-07-08 | 2027-08-09 |  |  |  |
| TAEXELCU090001 |  | Trench Cut off | 7d | 2027-07-08 | 2027-07-15 | TAEXELCU080001 |  | 0d |
| TAEXELCU090002 |  | Drawpit and PVC Pipes Installation | 5d | 2027-07-17 | 2027-07-21 | TAEXELCU090001, TAPQDVEL0005 |  | 0d |
| TAEXELCU090003 |  | Road Crossing Ducts | 3d | 2027-07-22 | 2027-07-25 | TAEXELCU090002 |  | 0d |

| ID | WBS | Task | Duration | Start | Finish | Predecessors | Total float |
| --- | --- | --- | --- | --- | --- | --- | --- |
| TAEXELCU090006 |  | Poles RC Foundation | 4d | 2027-07-22 | 2027-07-26 | TAEXELCU090002, TAPQDVEL0005 | 0d |
| TAEXELCU090004 |  | Trench Backfilling | 8d | 2027-07-26 | 2027-08-03 | TAEXELCU090003 | 0d |
| TAEXELCU090008 |  | Lighting Pole Installation with Luminares | 5d | 2027-07-27 | 2027-08-01 | TAEXELCU090006 | 0d |
| TAEXELCU090005 |  | Cables Pulling | 3d | 2027-08-04 | 2027-08-07 | TAEXELCU090002, TAEXELCU090003, TAEXELCU090004 | 0d |
| TAEXELCU090007 |  | Earthing cables | 2d | 2027-08-08 | 2027-08-09 | TAEXELCU090006, TAEXELCU090005, TAEXELCU080007 | 0d |
|  | 1 | **CCTV Works** |  | 2027-06-30 | 2027-08-11 |  |  |
| TAEXCCCU090001 |  | Pipe Installation with manhole | 7d | 2027-06-30 | 2027-07-07 | TAEXCCCU080001 | 0d |
| TAEXCCCU090002 |  | CCTV Swiches Lighting panels Installation | 10d | 2027-07-08 | 2027-07-19 | TAEXCCCU090001 | 4d |
| TAEXCCCU090003 |  | Cable laying and connected with Panels | 10d | 2027-07-20 | 2027-07-31 | TAEXCCCU090002 | 4d |
| TAEXCCCU090004 |  | Pole Installation with IP Outdoor CCTV POE Camera | 10d | 2027-08-01 | 2027-08-11 | TAEXCCCU090003 | 4d |
|  | 10 | **Upgrade Local 12** |  | 2026-11-30 | 2027-08-14 |  |  |
|  | 18 | **Road works** |  | 2027-04-10 | 2027-07-15 |  |  |
| TAEXRDCU120002 |  | Precast Concret Kerps | 18d | 2027-04-10 | 2027-04-29 | TAEXRDCU290005 | 15d |
| TAEXRDCU120001 |  | BWC Asphalt Wearing Course with RC | 1d | 2027-06-16 | 2027-06-16 | TAEXRDCU120002 FS+40d | 15d |
| TAEXRDCU120003 |  | Precast Interlock Works | 16d | 2027-06-17 | 2027-07-05 | TAEXRDCU120002, TAEXRDCU120001 | 15d |
| TAEXRDCU120004 |  | Stone Paving works | 5d | 2027-07-06 | 2027-07-11 | TAEXRDCU120003 | 15d |
| TAEXRDCU120005 |  | Road Marking | 1d | 2027-07-12 | 2027-07-12 | TAEXRDCU120004 | 15d |
| TAEXRDCU120006 |  | Traffic Sinage | 3d | 2027-07-13 | 2027-07-15 | TAEXRDCU120005 | 15d |
|  | 19 | **Electrical Works** |  | 2027-03-01 | 2027-08-14 |  |  |
| TAEXELCU120001 |  | Trench Cut off | 12d | 2027-03-01 | 2027-03-14 | TAEXELCU330001 | 0d |
| TAEXELCU120002 |  | Drawpit and PVC Pipes Installation | 9d | 2027-03-15 | 2027-03-24 | TAEXELCU120001, TAPQDVEL0005 | 89d |
| TAEXELCU120003 |  | Road Crossing Ducts | 4d | 2027-03-25 | 2027-03-29 | TAEXELCU120002 | 89d |
| TAEXELCU120006 |  | Poles RC Foundation | 7d | 2027-03-25 | 2027-04-01 | TAEXELCU120002, TAPQDVEL0005 | 94d |
| TAEXELCU120008 |  | Lighting Pole Installation with Luminares | 10d | 2027-04-03 | 2027-04-13 | TAEXELCU120006 | 94d |
| TAEXELCU120004 |  | Trench Backfilling | 17d | 2027-04-12 | 2027-05-01 | TAEXELCU120003, TAEXELCL010002 | 78d |
| TAEXELCU120005 |  | Cables Pulling | 8d | 2027-05-02 | 2027-05-10 | TAEXELCU120002, TAEXELCU120003, TAEXELCU120004 | 78d |
| TAEXELCU120007 |  | Earthing cables | 4d | 2027-08-10 | 2027-08-14 | TAEXELCU120006, TAEXELCU120005, TAEXELCU090007 | 0d |
|  | 1 | **Telecommunication Works** |  | 2027-02-11 | 2027-07-14 |  |  |
| TAEXTCCU120001 |  | Trench Cut off | 15d | 2027-02-11 | 2027-02-28 | TAEXTCCU330001 | 45d |
| TAEXTCCU120002 |  | Drawpit and PVC Pipes Installation | 9d | 2027-06-10 | 2027-06-20 | TAEXTCCU120001, TAEXTCCL090002 | 0d |
| TAEXTCCU120003 |  | Road Crossing Ducts | 4d | 2027-06-21 | 2027-06-24 | TAEXTCCU120002 | 14d |
| TAEXTCCU120004 |  | Trench Backfilling | 17d | 2027-06-26 | 2027-07-14 | TAEXTCCU120003 | 14d |
|  | 15 | **CCTV Works** |  | 2027-03-09 | 2027-05-03 |  |  |
| TAEXCCCU120001 |  | Pipe Installation with manhole | 11d | 2027-03-09 | 2027-03-21 | TAEXCCCU330001 | 0d |
| TAEXCCCU120002 |  | CCTV Swiches Lighting panels Installation | 12d | 2027-03-22 | 2027-04-04 | TAEXCCCU120001 | 86d |
| TAEXCCCU120003 |  | Cable laying and connected with Panels | 11d | 2027-04-05 | 2027-04-17 | TAEXCCCU120002 | 86d |
| TAEXCCCU120004 |  | Pole Installation with IP Outdoor CCTV POE Camera | 14d | 2027-04-18 | 2027-05-03 | TAEXCCCU120003 | 86d |
|  | 2 | **Potable Networks** |  | 2026-12-29 | 2027-05-04 |  |  |
| TAEXPTCU120001 |  | Excavation works for Trench | 12d | 2026-12-29 | 2027-01-11 | TAEXPTCU210001 | 1d |
| TAEXPTCU120002 |  | Bedding Works | 2d | 2027-01-12 | 2027-01-13 | TAEXPTCU120001 | 40d |
| TAEXPTCU120003 |  | Install Pipes & Fittings | 8d | 2027-02-20 | 2027-02-28 | TAEXPTCU120002, TAEXPTCU330003 | 9d |
| TAEXPTCU120004 |  | Backfilling Works for Trench | 18d | 2027-03-01 | 2027-03-21 | TAEXPTCU120003 | 9d |
| TAEXPTCU120005 |  | Install Valves with fittings | 4d | 2027-03-17 | 2027-03-21 | TAEXPTCU120004 FF, TAPQDVPT00021 | 9d |
| TAEXPTCU120006 |  | Install fire hydrent | 9d | 2027-03-22 | 2027-03-31 | TAEXPTCU120003, TAEXPTCU120005 | 9d |
| TAEXPTCU120007 |  | Valve Chamber works | 16d | 2027-04-11 | 2027-04-28 | TAEXPTCU120006, TAEXPTCU330007 | 1d |
| TAEXPTCU120008 |  | Inspection Test | 5d | 2027-04-29 | 2027-05-04 | TAEXPTCU120007 | 79d |
|  | 3 | **TSE Networks** |  | 2026-11-30 | 2027-05-15 |  |  |
| TAEXTSCU120001 |  | Excavation works for Trench | 22d | 2026-11-30 | 2026-12-24 | TAEXTSCU210001 | 54d |
| TAEXTSCU120002 |  | Bedding Works | 2d | 2026-12-26 | 2026-12-27 | TAEXTSCU120001 | 124d |
| TAEXTSCU120003 |  | Install Pipes & Fittings | 8d | 2027-03-20 | 2027-03-28 | TAEXTSCU120002, TAEXTSCU330003 | 54d |
| TAEXTSCU120004 |  | Backfilling Works for Trench | 18d | 2027-03-29 | 2027-04-18 | TAEXTSCU120003 | 70d |
| TAEXTSCU120005 |  | Install Valves with fittings | 4d | 2027-04-14 | 2027-04-18 | TAEXTSCU120004 FF | 70d |
| TAEXTSCU120006 |  | Valve Chamber works | 18d | 2027-04-19 | 2027-05-09 | TAEXTSCU120005 | 70d |
| TAEXTSCU120007 |  | Inspection Test | 5d | 2027-05-10 | 2027-05-15 | TAEXTSCU120006 | 70d |
|  | 12 | **Sewerage Networks** |  | 2027-03-21 | 2027-06-01 |  |  |
| TAEXSWCU120001 |  | Excavation works for Trench | 16d | 2027-03-21 | 2027-04-07 | TAEXSWCU210001 | 2d |
| TAEXSWCU120002 |  | Bedding Works | 4d | 2027-04-08 | 2027-04-12 | TAEXSWCU120001 | 50d |
| TAEXSWCU120003 |  | Install GRP Pipes & Fittings | 14d | 2027-04-13 | 2027-04-28 | TAEXSWCU120002 | 50d |
| TAEXSWCU120004 |  | Backfilling Works for Trench | 13d | 2027-05-02 | 2027-05-16 | TAEXSWCU120003 FF+15d | 50d |
| TAEXSWCU120005 |  | Manhole Installation with backfilling | 12d | 2027-05-15 | 2027-05-27 | TAEXSWCU120004 FF+10d, TAEXSWCU120003, TAPQDVSW00021 | 50d |
| TAEXSWCU120006 |  | Leakage Test | 4d | 2027-05-29 | 2027-06-01 | TAEXSWCU120005 | 50d |
|  | 4 | **Storm Networks** |  | 2027-03-30 | 2027-06-15 |  |  |
| TAEXSTCU120001 |  | Excavation works for Trench | 18d | 2027-03-30 | 2027-04-19 | TAEXSTCU330001, TAEXELCU330001 | 50d |
| TAEXSTCU120002 |  | Bedding Works | 4d | 2027-04-20 | 2027-04-24 | TAEXSTCU120001 | 50d |
| TAEXSTCU120003 |  | Install GRP Pipes & Fittings | 14d | 2027-04-25 | 2027-05-10 | TAEXSTCU120002 | 50d |
| TAEXSTCU120004 |  | Backfilling Works for Trench | 13d | 2027-05-13 | 2027-05-27 | TAEXSTCU120003 FF+15d | 50d |
| TAEXSTCU120005 |  | Manhole Installation with backfilling | 12d | 2027-05-15 | 2027-05-27 | TAEXSTCU120004 FF, TAEXSTCU120003, TAPQDVST00061 | 50d |
| TAEXSTCU120006 |  | Install Catch Basin with UPVC Pipes & Fittings | 12d | 2027-05-29 | 2027-06-10 | TAEXSTCU120005, TAEXSTCU330006 | 50d |
| TAEXSTCU120007 |  | Leakage Test | 4d | 2027-06-12 | 2027-06-15 | TAEXSTCU120005, TAEXSTCU120006 | 50d |
|  | 11 | **Upgrade Local 14** |  | 2027-05-25 | 2027-08-16 |  |  |

| ID | WBS | Task | Duration | Start | Finish | Predecessors | Total float |
| --- | --- | --- | --- | --- | --- | --- | --- |
|  | 21 | **Electrical Works** |  | 2027-05-30 | 2027-08-16 |  |  |
| TAEXELCU140001 |  | Trench Cut off | 10d | 2027-05-30 | 2027-06-09 | TAEXELCU290001 | 0d |
| TAEXELCU140002 |  | Drawpit and PVC Pipes Installation | 6d | 2027-06-10 | 2027-06-16 | TAEXELCU140001, TAPQDVEL0005 | 29d |
| TAEXELCU140003 |  | Road Crossing Ducts | 3d | 2027-06-17 | 2027-06-20 | TAEXELCU140002 | 33d |
| TAEXELCU140006 |  | Poles RC Foundation | 4d | 2027-06-17 | 2027-06-21 | TAEXELCU140002, TAPQDVEL0005 | 29d |
| TAEXELCU140004 |  | Trench Backfilling | 10d | 2027-06-21 | 2027-07-01 | TAEXELCU140003 | 33d |
| TAEXELCU140008 |  | Lighting Pole Installation with Luminares | 6d | 2027-06-22 | 2027-06-28 | TAEXELCU140006 | 29d |
| TAEXELCU140005 |  | Cables Pulling | 4d | 2027-07-03 | 2027-07-06 | TAEXELCU140002, TAEXELCU140003, TAEXELCU140004 | 33d |
| TAEXELCU140007 |  | Earthing cables | 2d | 2027-08-15 | 2027-08-16 | TAEXELCU140006, TAEXELCU140005, TAEXELCU120007 | 0d |
|  | 22 | **CCTV Works** |  | 2027-05-25 | 2027-07-06 |  |  |
| TAEXCCCU140001 |  | Pipe Installation with manhole | 7d | 2027-05-25 | 2027-06-01 | TAEXCCCU290001 | 0d |
| TAEXCCCU140002 |  | CCTV Swiches Lighting panels Installation | 12d | 2027-06-02 | 2027-06-15 | TAEXCCCU140001 | 14d |
| TAEXCCCU140003 |  | Cable laying and connected with Panels | 8d | 2027-06-16 | 2027-06-24 | TAEXCCCU140002 | 31d |
| TAEXCCCU140004 |  | Pole Installation with IP Outdoor CCTV POE Camera | 10d | 2027-06-26 | 2027-07-06 | TAEXCCCU140003 | 31d |
|  | 12 | **Upgrade Local 18** |  | 2027-07-08 | 2027-08-10 |  |  |
|  | 27 | **CCTV Works** |  | 2027-07-08 | 2027-08-10 |  |  |
| TAEXCCCU180001 |  | Pipe Installation with manhole | 8d | 2027-07-08 | 2027-07-17 | TAEXCCCU090001 | 0d |
| TAEXCCCU180002 |  | CCTV Swiches Lighting panels Installation | 9d | 2027-07-18 | 2027-07-27 | TAEXCCCU180001 | 0d |
| TAEXCCCU180003 |  | Cable laying and connected with Panels | 7d | 2027-07-28 | 2027-08-04 | TAEXCCCU180002 | 0d |
| TAEXCCCU180004 |  | Pole Installation with IP Outdoor CCTV POE Camera | 5d | 2027-08-05 | 2027-08-10 | TAEXCCCU180003 | 0d |
|  | 13 | **Upgrade Local 20** |  | 2026-12-08 | 2027-08-21 |  |  |
|  | 16 | **Electrical Works** |  | 2027-01-21 | 2027-08-21 |  |  |
| TAEXELCU200001 |  | Trench Cut off | 11d | 2027-01-21 | 2027-02-02 | TAEXELCL050001 | 0d |
| TAEXELCU200002 |  | Drawpit and PVC Pipes Installation | 9d | 2027-03-02 | 2027-03-11 | TAEXELCU200001, TAPQDVEL0005 | 98d |
| TAEXELCU200003 |  | Road Crossing Ducts | 4d | 2027-03-13 | 2027-03-16 | TAEXELCU200002 | 98d |
| TAEXELCU200006 |  | Poles RC Foundation | 7d | 2027-03-13 | 2027-03-20 | TAEXELCU200002, TAPQDVEL0005 | 106d |
| TAEXELCU200004 |  | Trench Backfilling | 14d | 2027-03-17 | 2027-04-01 | TAEXELCU200003 | 98d |
| TAEXELCU200008 |  | Lighting Pole Installation with Luminares | 9d | 2027-03-21 | 2027-03-30 | TAEXELCU200006 | 106d |
| TAEXELCU200005 |  | Cables Pulling | 4d | 2027-04-03 | 2027-04-06 | TAEXELCU200002, TAEXELCU200003, TAEXELCU200004 | 98d |
| TAEXELCU200009 |  | Install Substation & RMU | 9d | 2027-04-22 | 2027-05-02 | TAEXELCU200005, TAPQDVEL0004 | 85d |
| TAEXELCU200007 |  | Earthing cables | 4d | 2027-08-17 | 2027-08-21 | TAEXELCU200006, TAEXELCU140007 | 0d |
|  | 14 | **CCTV Works** |  | 2027-02-04 | 2027-07-26 |  |  |
| TAEXCCCU200001 |  | Pipe Installation with manhole | 10d | 2027-02-04 | 2027-02-15 | TAEXCCCC020001 | 0d |
| TAEXCCCU200002 |  | CCTV Swiches Lighting panels Installation | 13d | 2027-06-16 | 2027-06-30 | TAEXCCCU200001, TAEXCCCU140002 | 14d |
| TAEXCCCU200003 |  | Cable laying and connected with Panels | 10d | 2027-07-01 | 2027-07-12 | TAEXCCCU200002 | 14d |
| TAEXCCCU200004 |  | Pole Installation with IP Outdoor CCTV POE Camera | 12d | 2027-07-13 | 2027-07-26 | TAEXCCCU200003 | 14d |
|  | 1 | **Potable Networks** |  | 2026-12-08 | 2027-02-28 |  |  |
| TAEXPTCU200007 |  | Valve Chamber works | 17d | 2026-12-08 | 2026-12-27 | TAEXPTCL0500071 | 52d |
| TAEXPTCU200008 |  | Inspection Test | 5d | 2026-12-28 | 2027-01-02 | TAEXPTCU200007 | 184d |
| TAEXPTCU200001 |  | Excavation works for Trench | 9d | 2027-01-12 | 2027-01-21 | TAEXPTCU120001 | 1d |
| TAEXPTCU200002 |  | Bedding Works | 2d | 2027-01-23 | 2027-01-24 | TAEXPTCU200001 | 2d |
| TAEXPTCU200003 |  | Install Pipes & Fittings | 8d | 2027-01-25 | 2027-02-02 | TAEXPTCU200002, TAEXPTCL050003 | 2d |
| TAEXPTCU200004 |  | Backfilling Works for Trench | 16d | 2027-02-03 | 2027-02-21 | TAEXPTCU200003 | 122d |
| TAEXPTCU200005 |  | Install Valves with fittings | 4d | 2027-02-17 | 2027-02-21 | TAEXPTCU200004 FF, TAPQDVPT00021 | 122d |
| TAEXPTCU200006 |  | Install fire hydrent | 6d | 2027-02-22 | 2027-02-28 | TAEXPTCU200003, TAEXPTCU200005 | 122d |
|  | 2 | **TSE Networks** |  | 2026-12-26 | 2027-03-14 |  |  |
| TAEXTSCU200001 |  | Excavation works for Trench | 20d | 2026-12-26 | 2027-01-17 | TAEXTSCU120001 | 54d |
| TAEXTSCU200002 |  | Bedding Works | 2d | 2027-01-18 | 2027-01-19 | TAEXTSCU200001 | 83d |
| TAEXTSCU200003 |  | Install Pipes & Fittings | 8d | 2027-01-20 | 2027-01-28 | TAEXTSCU200002, TAEXTSCL050003, TAEXTSCL050003 FF | 83d |
| TAEXTSCU200004 |  | Backfilling Works for Trench | 16d | 2027-01-30 | 2027-02-16 | TAEXTSCU200003 | 123d |
| TAEXTSCU200005 |  | Install Valves with fittings | 4d | 2027-02-13 | 2027-02-16 | TAEXTSCU200004 FF | 123d |
| TAEXTSCU200006 |  | Valve Chamber works | 17d | 2027-02-17 | 2027-03-08 | TAEXTSCU200005 | 123d |
| TAEXTSCU200007 |  | Inspection Test | 5d | 2027-03-09 | 2027-03-14 | TAEXTSCU200006 | 123d |
|  | 3 | **Sewerage Networks** |  | 2027-04-08 | 2027-06-15 |  |  |
| TAEXSWCU200001 |  | Excavation works for Trench | 15d | 2027-04-08 | 2027-04-25 | TAEXSWCU120001 | 2d |
| TAEXSWCU200002 |  | Bedding Works | 3d | 2027-04-26 | 2027-04-28 | TAEXSWCU200001 | 38d |
| TAEXSWCU200003 |  | Install GRP Pipes & Fittings | 12d | 2027-04-29 | 2027-05-12 | TAEXSWCU200002 | 38d |
| TAEXSWCU200004 |  | Backfilling Works for Trench | 17d | 2027-05-11 | 2027-05-30 | TAEXSWCU200003 FF+15d | 38d |
| TAEXSWCU200005 |  | Manhole Installation with backfilling | 16d | 2027-05-24 | 2027-06-10 | TAEXSWCU200004 FF+10d, TAEXSWCU200003, TAPQDVSW00021 | 38d |
| TAEXSWCU200006 |  | Leakage Test | 4d | 2027-06-12 | 2027-06-15 | TAEXSWCU200005 | 38d |
|  | 14 | **Upgrade Local 29** |  | 2027-02-07 | 2027-08-23 |  |  |
|  | 25 | **Road Works** |  | 2027-03-18 | 2027-06-06 |  |  |
| TAEXRDCU290001 |  | Asphalt Milling and Deisposal | 4d | 2027-03-18 | 2027-03-22 | TAEXRDCL080000 | 15d |
| TAEXRDCU290002 |  | MBC1 layer | 1d | 2027-03-23 | 2027-03-23 | TAEXRDCU290001 | 15d |
| TAEXRDCU290003 |  | BBC Base Course | 4d | 2027-03-24 | 2027-03-28 | TAEXRDCU290002 | 15d |
| TAEXRDCU290005 |  | Precast Concret Kerps | 10d | 2027-03-29 | 2027-04-08 | TAEXRDCU290003 | 15d |
| TAEXRDCU290004 |  | BWC Asphalt Wearing Course with RC | 3d | 2027-04-10 | 2027-04-12 | TAEXRDCU290003, TAEXRDCU290005 | 49d |
| TAEXRDCU290006 |  | Precast Interlock Works | 8d | 2027-05-24 | 2027-06-01 | TAEXRDCU290005, TAEXRDCU290004 FS+35d | 49d |
| TAEXRDCU290007 |  | Stone Paving works | 2d | 2027-06-02 | 2027-06-03 | TAEXRDCU290006 | 49d |
| TAEXRDCU290008 |  | Road Marking | 1d | 2027-06-05 | 2027-06-05 | TAEXRDCU290007 | 49d |

| ID | WBS | Task | Duration | Start | Finish | Predecessors | Total float |
| --- | --- | --- | --- | --- | --- | --- | --- |
| TAEXRDCU290009 |  | Traffic Sinage | 1d | 2027-06-06 | 2027-06-06 | TAEXRDCU290008 | 49d |
|  | 20 | **Electrical Works** |  | 2027-05-18 | 2027-08-23 |  |  |
| TAEXELCU290001 |  | Trench Cut off | 10d | 2027-05-18 | 2027-05-29 | TAEXELCL090001 | 0d |
| TAEXELCU290002 |  | Drawpit and PVC Pipes Installation | 6d | 2027-05-30 | 2027-06-05 | TAEXELCU290001, TAPQDVEL0005 | 39d |
| TAEXELCU290003 |  | Road Crossing Ducts | 3d | 2027-06-06 | 2027-06-08 | TAEXELCU290002 | 49d |
| TAEXELCU290006 |  | Poles RC Foundation | 4d | 2027-06-06 | 2027-06-09 | TAEXELCU290002, TAPQDVEL0005 | 39d |
| TAEXELCU290004 |  | Trench Backfilling | 10d | 2027-06-09 | 2027-06-20 | TAEXELCU290003 | 49d |
| TAEXELCU290008 |  | Lighting Pole Installation with Luminares | 6d | 2027-06-10 | 2027-06-16 | TAEXELCU290006 | 39d |
| TAEXELCU290005 |  | Cables Pulling | 4d | 2027-06-21 | 2027-06-24 | TAEXELCU290002, TAEXELCU290003, TAEXELCU290004 | 49d |
| TAEXELCU290007 |  | Earthing cables | 2d | 2027-08-22 | 2027-08-23 | TAEXELCU290006, TAEXELCU290005, TAEXELCU200007 | 0d |
|  | 1 | **Telecommunication Works** |  | 2027-04-14 | 2027-07-12 |  |  |
| TAEXTCCU290001 |  | Trench Cut off | 10d | 2027-04-14 | 2027-04-25 | TAEXTCCL090001 | 48d |
| TAEXTCCU290002 |  | Drawpit and PVC Pipes Installation | 6d | 2027-06-21 | 2027-06-27 | TAEXTCCU290001, TAEXTCCU120002 | 0d |
| TAEXTCCU290003 |  | Road Crossing Ducts | 3d | 2027-06-28 | 2027-06-30 | TAEXTCCU290002 | 16d |
| TAEXTCCU290004 |  | Trench Backfilling | 10d | 2027-07-01 | 2027-07-12 | TAEXTCCU290003 | 16d |
|  | 21 | **CCTV Works** |  | 2027-05-17 | 2027-06-27 |  |  |
| TAEXCCCU290001 |  | Pipe Installation with manhole | 7d | 2027-05-17 | 2027-05-24 | TAEXCCCL090001 | 0d |
| TAEXCCCU290002 |  | CCTV Swiches Lighting panels Installation | 10d | 2027-05-25 | 2027-06-05 | TAEXCCCU290001 | 29d |
| TAEXCCCU290003 |  | Cable laying and connected with Panels | 9d | 2027-06-06 | 2027-06-15 | TAEXCCCU290002 | 39d |
| TAEXCCCU290004 |  | Pole Installation with IP Outdoor CCTV POE Camera | 10d | 2027-06-16 | 2027-06-27 | TAEXCCCU290003 | 39d |
|  | 2 | **Potable Networks** |  | 2027-02-07 | 2027-08-15 |  |  |
| TAEXPTCU290001 |  | Excavation works for Trench | 4d | 2027-02-07 | 2027-02-10 | TAEXPTCU330001 | 118d |
| TAEXPTCU290002 |  | Bedding Works | 2d | 2027-02-11 | 2027-02-13 | TAEXPTCU290001 | 118d |
| TAEXPTCU290003 |  | Install Pipes & Fittings | 5d | 2027-02-14 | 2027-02-18 | TAEXPTCU290002, TAEXPTCL0900031 | 118d |
| TAEXPTCU290004 |  | Backfilling Works for Trench | 12d | 2027-02-20 | 2027-03-04 | TAEXPTCU290003 | 118d |
| TAEXPTCU290005 |  | Install Valves with fittings | 4d | 2027-03-01 | 2027-03-04 | TAEXPTCU290004 FF, TAPQDVPT00021 | 118d |
| TAEXPTCU290006 |  | Install fire hydrent | 5d | 2027-03-06 | 2027-03-10 | TAEXPTCU290003, TAEXPTCU290005, TAEXPTCU200006 | 118d |
| TAEXPTCU290007 |  | Valve Chamber works | 15d | 2027-07-26 | 2027-08-11 | TAEXPTCU290006, TAEXPTCL090007 | 1d |
| TAEXPTCU290008 |  | Inspection Test | 3d | 2027-08-12 | 2027-08-15 | TAEXPTCU290007 | 1d |
|  | 3 | **TSE Networks** |  | 2027-03-11 | 2027-04-27 |  |  |
| TAEXTSCU290001 |  | Excavation works for Trench | 4d | 2027-03-11 | 2027-03-15 | TAEXTSCU330001 | 85d |
| TAEXTSCU290002 |  | Bedding Works | 2d | 2027-03-16 | 2027-03-17 | TAEXTSCU290001 | 85d |
| TAEXTSCU290003 |  | Install Pipes & Fittings | 5d | 2027-03-18 | 2027-03-23 | TAEXTSCU290002, TAEXTSCL090003 | 85d |
| TAEXTSCU290004 |  | Backfilling Works for Trench | 12d | 2027-03-24 | 2027-04-06 | TAEXTSCU290003 | 85d |
| TAEXTSCU290005 |  | Install Valves with fittings | 4d | 2027-04-03 | 2027-04-06 | TAEXTSCU290004 FF | 85d |
| TAEXTSCU290006 |  | Valve Chamber works | 15d | 2027-04-07 | 2027-04-24 | TAEXTSCU290005 | 85d |
| TAEXTSCU290007 |  | Inspection Test | 3d | 2027-04-25 | 2027-04-27 | TAEXTSCU290006 | 85d |
|  | 15 | **Upgrade Local 32** |  | 2026-12-28 | 2027-08-28 |  |  |
|  | 17 | **Electrical Works** |  | 2027-02-03 | 2027-08-28 |  |  |
| TAEXELCU320001 |  | Trench Cut off | 11d | 2027-02-03 | 2027-02-15 | TAEXELCU200001 | 0d |
| TAEXELCU320002 |  | Drawpit and PVC Pipes Installation | 4d | 2027-03-02 | 2027-03-06 | TAEXELCU320001, TAPQDVEL0005 | 111d |
| TAEXELCU320003 |  | Road Crossing Ducts | 12d | 2027-03-07 | 2027-03-20 | TAEXELCU320002 | 114d |
| TAEXELCU320006 |  | Poles RC Foundation | 7d | 2027-03-07 | 2027-03-14 | TAEXELCU320002, TAPQDVEL0005 | 111d |
| TAEXELCU320008 |  | Lighting Pole Installation with Luminares | 9d | 2027-03-15 | 2027-03-24 | TAEXELCU320006 | 111d |
| TAEXELCU320004 |  | Trench Backfilling | 16d | 2027-03-21 | 2027-04-07 | TAEXELCU320003 | 114d |
| TAEXELCU320005 |  | Cables Pulling | 4d | 2027-04-08 | 2027-04-12 | TAEXELCU320002, TAEXELCU320003, TAEXELCU320004 | 114d |
| TAEXELCU320007 |  | Earthing cables | 4d | 2027-08-24 | 2027-08-28 | TAEXELCU320006, TAEXELCU320005, TAEXELCU290007 | 0d |
|  | 4 | **Telecommunication Works** |  | 2027-02-16 | 2027-08-07 |  |  |
| TAEXCCCU320001 |  | Pipe Installation with manhole | 10d | 2027-02-16 | 2027-02-27 | TAEXCCCU200001 | 0d |
| TAEXCCCU320002 |  | CCTV Swiches Lighting panels Installation | 13d | 2027-06-28 | 2027-07-12 | TAEXCCCU320001, TAEXTCCU290002 | 0d |
| TAEXCCCU320003 |  | Cable laying and connected with Panels | 10d | 2027-07-13 | 2027-07-24 | TAEXCCCU320002 | 4d |
| TAEXCCCU320004 |  | Pole Installation with IP Outdoor CCTV POE Camera | 12d | 2027-07-25 | 2027-08-07 | TAEXCCCU320003 | 4d |
|  | 16 | **Potable Networks** |  | 2026-12-28 | 2027-03-10 |  |  |
| TAEXPTCU320007 |  | Valve Chamber works | 17d | 2026-12-28 | 2027-01-16 | TAEXPTCU200007 | 52d |
| TAEXPTCU320008 |  | Inspection Test | 5d | 2027-01-17 | 2027-01-21 | TAEXPTCU320007 | 162d |
| TAEXPTCU320001 |  | Excavation works for Trench | 9d | 2027-01-23 | 2027-02-01 | TAEXPTCU200001 | 1d |
| TAEXPTCU320002 |  | Bedding Works | 2d | 2027-02-02 | 2027-02-03 | TAEXPTCU320001 | 1d |
| TAEXPTCU320003 |  | Install Pipes & Fittings | 8d | 2027-02-04 | 2027-02-13 | TAEXPTCU320002, TAEXPTCU200003 | 1d |
| TAEXPTCU320004 |  | Backfilling Works for Trench | 16d | 2027-02-14 | 2027-03-03 | TAEXPTCU320003 | 1d |
| TAEXPTCU320005 |  | Install Valves with fittings | 4d | 2027-02-28 | 2027-03-03 | TAEXPTCU320004 FF, TAPQDVPT00021 | 1d |
| TAEXPTCU320006 |  | Install fire hydrent | 6d | 2027-03-04 | 2027-03-10 | TAEXPTCU320003, TAEXPTCU320005 | 1d |
|  | 1 | **TSE Networks** |  | 2027-01-18 | 2027-04-06 |  |  |
| TAEXTSCU320001 |  | Excavation works for Trench | 20d | 2027-01-18 | 2027-02-09 | TAEXTSCU200001 | 54d |
| TAEXTSCU320002 |  | Bedding Works | 2d | 2027-02-10 | 2027-02-11 | TAEXTSCU320001 | 71d |
| TAEXTSCU320003 |  | Install Pipes & Fittings | 8d | 2027-02-13 | 2027-02-21 | TAEXTSCU320002, TAEXTSCU200003, TAEXTSCU200003 FF | 71d |
| TAEXTSCU320004 |  | Backfilling Works for Trench | 16d | 2027-02-22 | 2027-03-11 | TAEXTSCU320003, TAEXTSCU320003 FF | 103d |
| TAEXTSCU320005 |  | Install Valves with fittings | 4d | 2027-03-08 | 2027-03-11 | TAEXTSCU320004 FF | 103d |
| TAEXTSCU320006 |  | Valve Chamber works | 17d | 2027-03-13 | 2027-03-31 | TAEXTSCU320004, TAEXTSCU320005 | 103d |
| TAEXTSCU320007 |  | Inspection Test | 5d | 2027-04-01 | 2027-04-06 | TAEXTSCU320006, TAEXPTCU320008 | 103d |
|  | 3 | **Storm Networks** |  | 2027-02-16 | 2027-04-29 |  |  |

| ID | WBS | Task | Duration | Start | Finish | Predecessors | Complete | Total float |
| --- | --- | --- | --- | --- | --- | --- | --- | --- |
| TAEXSTCU320001 |  | Excavation works for Trench | 10d | 2027-02-16 | 2027-02-27 | TAEXSTCL0800011, TAEXELCU320001 |  | 50d |
| TAEXSTCU320002 |  | Bedding Works | 3d | 2027-02-28 | 2027-03-02 | TAEXSTCU320001 |  | 68d |
| TAEXSTCU320003 |  | Install GRP Pipes & Fittings | 6d | 2027-03-03 | 2027-03-09 | TAEXSTCU320002 |  | 68d |
| TAEXSTCU320004 |  | Backfilling Works for Trench | 17d | 2027-03-08 | 2027-03-27 | TAEXSTCU320003 FF+15d |  | 68d |
| TAEXSTCU320005 |  | Manhole Installation with backfilling | 16d | 2027-03-21 | 2027-04-07 | TAEXSTCU320004 FF+10d, TAEXSTCU320003 SS, TAPQDVST00061 |  | 68d |
| TAEXSTCU320006 |  | Install Catch Basin with UPVC Pipes & Fittings | 15d | 2027-04-08 | 2027-04-25 | TAEXSTCU320005, TAEXSTCL060006 |  | 68d |
| TAEXSTCU320007 |  | Leakage Test | 4d | 2027-04-26 | 2027-04-29 | TAEXSTCU320005, TAEXSTCU320006, TAEXTSCU320007 |  | 90d |
|  | 16 | **Upgrade Local 33** |  | 2027-02-02 | 2027-08-30 |  |  |  |
|  | 27 | **Road Works** |  | 2027-06-05 | 2027-06-30 |  |  |  |
| TAEXRDCU330002 |  | Precast Concret Kerps | 10d | 2027-06-05 | 2027-06-15 | TAEXRDCU120002 FS+30d |  | 28d |
| TAEXRDCU330001 |  | BWC Asphalt Wearing Course with RC | 1d | 2027-06-16 | 2027-06-16 | TAEXRDCU330002 |  | 28d |
| TAEXRDCU330003 |  | Precast Interlock Works | 8d | 2027-06-17 | 2027-06-26 | TAEXRDCU330002, TAEXRDCU330001 |  | 28d |
| TAEXRDCU330004 |  | Stone Paving works | 2d | 2027-06-27 | 2027-06-28 | TAEXRDCU330003 |  | 28d |
| TAEXRDCU330005 |  | Road Marking | 1d | 2027-06-29 | 2027-06-29 | TAEXRDCU330004 |  | 28d |
| TAEXRDCU330006 |  | Traffic Sinage | 1d | 2027-06-30 | 2027-06-30 | TAEXRDCU330005 |  | 28d |
|  | 18 | **Electrical Works** |  | 2027-02-16 | 2027-08-30 |  |  |  |
| TAEXELCU330001 |  | Trench Cut off | 11d | 2027-02-16 | 2027-02-28 | TAEXELCU320001 |  | 0d |
| TAEXELCU330002 |  | Drawpit and PVC Pipes Installation | 9d | 2027-03-02 | 2027-03-11 | TAEXELCU330001, TAPQDVEL0005 |  | 114d |
| TAEXELCU330003 |  | Road Crossing Ducts | 10d | 2027-03-13 | 2027-03-23 | TAEXELCU330002 |  | 119d |
| TAEXELCU330006 |  | Poles RC Foundation | 4d | 2027-03-13 | 2027-03-16 | TAEXELCU330002, TAPQDVEL0005 |  | 114d |
| TAEXELCU330008 |  | Lighting Pole Installation with Luminares | 4d | 2027-03-17 | 2027-03-21 | TAEXELCU330006 |  | 114d |
| TAEXELCU330004 |  | Trench Backfilling | 13d | 2027-03-24 | 2027-04-07 | TAEXELCU330003 |  | 119d |
| TAEXELCU330005 |  | Cables Pulling | 3d | 2027-04-08 | 2027-04-11 | TAEXELCU330002, TAEXELCU330003, TAEXELCU330004 |  | 119d |
| TAEXELCU330007 |  | Earthing cables | 2d | 2027-08-29 | 2027-08-30 | TAEXELCU330006, TAEXELCU330005, TAEXELCU320007 |  | 0d |
|  | 1 | **Telecommunication Works** |  | 2027-02-06 | 2027-07-31 |  |  |  |
| TAEXTCCU330001 |  | Trench Cut off | 5d | 2027-02-06 | 2027-02-10 | TAEXTCCL050001 |  | 45d |
| TAEXTCCU330002 |  | Drawpit and PVC Pipes Installation | 4d | 2027-07-13 | 2027-07-17 | TAEXTCCU330001, TAEXCCCU320002 |  | 0d |
| TAEXTCCU330003 |  | Road Crossing Ducts | 3d | 2027-07-18 | 2027-07-20 | TAEXTCCU330002 |  | 0d |
| TAEXTCCU330004 |  | Trench Backfilling | 9d | 2027-07-21 | 2027-07-31 | TAEXTCCU330003 |  | 0d |
|  | 17 | **CCTV Works** |  | 2027-02-28 | 2027-07-08 |  |  |  |
| TAEXCCCU330001 |  | Pipe Installation with manhole | 8d | 2027-02-28 | 2027-03-08 | TAEXCCCU320001 |  | 0d |
| TAEXCCCU330002 |  | CCTV Swiches Lighting panels Installation | 10d | 2027-06-06 | 2027-06-16 | TAEXCCCU330001, TAEXCCCU290002 |  | 29d |
| TAEXCCCU330003 |  | Cable laying and connected with Panels | 9d | 2027-06-17 | 2027-06-27 | TAEXCCCU330002 |  | 29d |
| TAEXCCCU330004 |  | Pole Installation with IP Outdoor CCTV POE Camera | 10d | 2027-06-28 | 2027-07-08 | TAEXCCCU330003 |  | 29d |
|  | 2 | **Potable Networks** |  | 2027-02-02 | 2027-04-13 |  |  |  |
| TAEXPTCU330001 |  | Excavation works for Trench | 4d | 2027-02-02 | 2027-02-06 | TAEXPTCU320001 |  | 10d |
| TAEXPTCU330002 |  | Bedding Works | 2d | 2027-02-07 | 2027-02-08 | TAEXPTCU330001 |  | 10d |
| TAEXPTCU330003 |  | Install Pipes & Fittings | 5d | 2027-02-14 | 2027-02-18 | TAEXPTCU330002, TAEXPTCU320003 |  | 6d |
| TAEXPTCU330004 |  | Backfilling Works for Trench | 12d | 2027-02-20 | 2027-03-04 | TAEXPTCU330003 |  | 6d |
| TAEXPTCU330005 |  | Install Valves with fittings | 4d | 2027-03-01 | 2027-03-04 | TAEXPTCU330004 FF, TAPQDVPT00021 |  | 6d |
| TAEXPTCU330006 |  | Install fire hydrent | 5d | 2027-03-11 | 2027-03-16 | TAEXPTCU330003, TAEXPTCU330005, TAEXPTCU320006 |  | 1d |
| TAEXPTCU330007 |  | Valve Chamber works | 21d | 2027-03-17 | 2027-04-10 | TAEXPTCU330006, TAEXPTCU320007 |  | 1d |
| TAEXPTCU330008 |  | Inspection Test | 3d | 2027-04-11 | 2027-04-13 | TAEXPTCU330007 |  | 97d |
|  | 3 | **TSE Networks** |  | 2027-02-10 | 2027-04-22 |  |  |  |
| TAEXTSCU330001 |  | Excavation works for Trench | 25d | 2027-02-10 | 2027-03-10 | TAEXTSCU320001 |  | 54d |
| TAEXTSCU330002 |  | Bedding Works | 2d | 2027-03-11 | 2027-03-13 | TAEXTSCU330001 |  | 54d |
| TAEXTSCU330003 |  | Install Pipes & Fittings | 5d | 2027-03-14 | 2027-03-18 | TAEXTSCU330002, TAEXTSCU320003 |  | 54d |
| TAEXTSCU330004 |  | Backfilling Works for Trench | 12d | 2027-03-20 | 2027-04-01 | TAEXTSCU330003 |  | 89d |
| TAEXTSCU330005 |  | Install Valves with fittings | 4d | 2027-03-29 | 2027-04-01 | TAEXTSCU330004 FF |  | 89d |
| TAEXTSCU330006 |  | Valve Chamber works | 15d | 2027-04-03 | 2027-04-19 | TAEXTSCU330005 |  | 89d |
| TAEXTSCU330007 |  | Inspection Test | 3d | 2027-04-20 | 2027-04-22 | TAEXTSCU330006 |  | 89d |
|  | 4 | **Sewerage Networks** |  | 2027-06-20 | 2027-07-27 |  |  |  |
| TAEXSWCU330001 |  | Excavation works for Trench | 10d | 2027-06-20 | 2027-06-30 | TAEXSWCU200001 FS+47d |  | 2d |
| TAEXSWCU330004 |  | Backfilling Works for Trench | 12d | 2027-06-28 | 2027-07-11 | TAEXSWCU330003 FF |  | 13d |
| TAEXSWCU330002 |  | Bedding Works | 2d | 2027-07-01 | 2027-07-03 | TAEXSWCU330001 |  | 2d |
| TAEXSWCU330003 |  | Install GRP Pipes & Fittings | 7d | 2027-07-04 | 2027-07-11 | TAEXSWCU330002 |  | 2d |
| TAEXSWCU330005 |  | Manhole Installation with backfilling | 11d | 2027-07-12 | 2027-07-24 | TAEXSWCU330004 FF, TAEXSWCU330003, TAPQDVSW00021 |  | 2d |
| TAEXSWCU330006 |  | Leakage Test | 3d | 2027-07-25 | 2027-07-27 | TAEXSWCU330005 |  | 2d |
|  | 5 | **Storm Networks** |  | 2027-03-11 | 2027-05-23 |  |  |  |
| TAEXSTCU330001 |  | Excavation works for Trench | 16d | 2027-03-11 | 2027-03-29 | TAEXSTCU320001 FS+10d |  | 50d |
| TAEXSTCU330002 |  | Bedding Works | 2d | 2027-03-30 | 2027-03-31 | TAEXSTCU330001 |  | 57d |
| TAEXSTCU330003 |  | Install GRP Pipes & Fittings | 7d | 2027-04-01 | 2027-04-08 | TAEXSTCU330002 |  | 57d |
| TAEXSTCU330004 |  | Backfilling Works for Trench | 12d | 2027-04-13 | 2027-04-26 | TAEXSTCU330003 FF+15d |  | 57d |
| TAEXSTCU330005 |  | Manhole Installation with backfilling | 11d | 2027-04-26 | 2027-05-08 | TAEXSTCU330004 FF+10d, TAEXSTCU330003, TAPQDVST00061 |  | 57d |
| TAEXSTCU330006 |  | Install Catch Basin with UPVC Pipes & Fittings | 10d | 2027-05-09 | 2027-05-19 | TAEXSTCU330005, TAEXSTCU320006 |  | 57d |
| TAEXSTCU330007 |  | Leakage Test | 3d | 2027-05-20 | 2027-05-23 | TAEXSTCU330005, TAEXSTCU330006 |  | 70d |
|  | 17 | **Pond** |  | 2025-09-04 | 2027-05-23 |  |  |  |
|  | 21 | **Storm Water Pond** |  | 2025-09-04 | 2027-05-23 |  |  |  |
| TAEXSTCSWP0001 |  | Excavation works for Ponds 1st Part | 27d | 2025-09-04 A | 2025-10-05 A | TAGNMZ0001 SS+7d, TAGNML0012 SS | 100% |  |
| TAEXSTCSWP0002 |  | Excavation works for Ponds 2nd Part | 24d | 2025-10-06 A | 2025-11-02 A | TAEXSTCSWP0001 | 100% |  |

| ID | WBS | Task | Duration | Start | Finish | Predecessors | Complete | Total float |
| --- | --- | --- | --- | --- | --- | --- | --- | --- |
| TAEXSTCSWP0003 |  | Excavation works for Ponds 3rd Part | 26d | 2025-11-03 A | 2025-12-02 A | TAEXSTCSWP0002 | 100% |  |
| TAEXSTCSWP0008 |  | Excavation works for Ponds slop | 172d | 2025-11-15 A | 2026-06-02 A | TAEXSTCSWP0005 | 100% |  |
| TAEXSTCSWP0004 |  | Excavation works for Ponds 4th Part | 57d | 2025-12-02 A | 2026-02-05 A | TAEXSTCSWP0003 | 100% |  |
| TAEXSTCSWP0013 |  | Filling with suitable and approved imported material for Dike | 94d | 2026-01-14 A | 2026-05-03 A | TAPQDVST0008 SS+3d | 100% |  |
| TAEXSTCSWP0005 |  | Excavation works for Ponds 5th Part | 17d | 2026-02-08 A | 2026-02-26 A | TAEXSTCSWP0004 | 100% |  |
| TAEXSTCSWP0014 |  | Loose Riprap, for protection | 10d | 2026-05-11 A | 2026-05-21 A | TAEXSTCSWP0013 | 100% |  |
| TAEXSTCSWP0006 |  | Excavation works for Ponds 6th part | 30d | 2026-08-29 | 2026-10-01 | TAEXSTCSWP0005, TAEXSTCL0200061 |  | 150d |
| TAEXSTCSWP0007 |  | Excavation works for ponds 7th part | 45d | 2026-10-03 | 2026-11-23 | TAEXSTCSWP0006 |  | 150d |
| TAEXSTCSWP0009 |  | Riprap Works part 1 | 12d | 2027-02-03 | 2027-02-16 | TAEXSTCSWP0008, TAPQDVST00071, TAEXSTCSWP0007 |  | 89d |
| TAEXSTCSWP0010 |  | Riprap Works Part 2 | 20d | 2027-02-17 | 2027-03-11 | TAEXSTCSWP0009 |  | 89d |
| TAEXSTCSWP0011 |  | Sand Marl Mix Ballast layer | 12d | 2027-03-13 | 2027-03-25 | TAEXSTCSWP0008, TAPQDVST00071 SS+5d, TAEXSTCSWP0010 |  | 89d |
| TAEXSTCSWP0012 |  | Outfall structure works | 20d | 2027-04-13 | 2027-05-05 | TAEXSTCSWP0011 FS+15d |  | 89d |
| TAEXSTCSWP00141 |  | Loose Riprap, for protection Part 01 | 15d | 2027-05-06 | 2027-05-23 | TAEXSTCSWP0014, TAPQDVST00101, TAEXSTCSWP0012 |  | 89d |
|  | 22 | **CLOSE OUT** |  | 2027-04-17 | 2027-09-03 |  |  |  |
|  | 3 | **Final Testing and Commmisionning** |  | 2027-04-17 | 2027-09-03 |  |  |  |
|  | 1 | **Final Test & commisionning Zone 1** |  | 2027-05-01 | 2027-06-28 |  |  |  |
| TACOFTFT0003 |  | Telecommunications Networks | 4d | 2027-05-01 | 2027-05-04 | TAEXTCCC020004, TAEXTCCC030004, TAEXTCCU210004, TAEXTCCL100004 |  | 89d |
| TACOFTFT0004 |  | CCTV Networks | 7d | 2027-05-12 | 2027-05-19 | TAEXCCCC030004, TAEXCCCU210004, TAEXCCCU260004, TAEXCCCL100004, TAEXCCCC020004 |  | 82d |
| TACOFTFT0002 |  | Electrical NetWorks | 7d | 2027-06-01 | 2027-06-08 | TAEXELCC020008 FS+30d, TAEXELCC030008, TAEXELCU210008, TAEXELCU260008, TAEXELCL100008 |  | 59d |
| TACOFTFT0007 |  | Sewerage Networks | 6d | 2027-06-08 | 2027-06-14 | TAEXSWCU210006, TAEXSWCL100006, TAEXSWCL0500061 |  | 60d |
| TACOFTFT0001 |  | Road Works | 4d | 2027-06-09 | 2027-06-13 | TAEXRDCC020012, TAEXRDCC030012, TAEXRDCU210006, TAEXRDCL100012 |  | 36d |
| TACOFTFT0008 |  | Storm Water Drainage Networks | 7d | 2027-06-12 | 2027-06-19 | TAEXSTCC030007, TAEXSTCU210007, TAEXSTCL100007, TAEXSTCC0200071 FS+20d |  | 52d |
| TACOFTFT0005 |  | Potable Water Networks | 4d | 2027-06-20 | 2027-06-23 | TAEXPTCC020008, TAEXPTCU210008, TAEXPTCL100008, TACOFTFT0008 |  | 52d |
| TACOFTFT0006 |  | TSE Networks | 4d | 2027-06-24 | 2027-06-28 | TAEXTSCC020007, TAEXTSCC030005, TAEXTSCU210007, TAEXTSCL100007 |  | 48d |
|  | 2 | **Final Test & commisionning Zone 2** |  | 2027-04-17 | 2027-08-24 |  |  |  |
| TACOFTFT0015 |  | Sewerage Networks | 6d | 2027-04-17 | 2027-04-22 | TAEXSWCC010006, TAEXSWCL030006, TAEXSWCL040006, TAEXSWCL0500061 |  | 84d |
| TACOFTFT0010 |  | Electrical NetWorks | 7d | 2027-04-26 | 2027-05-03 | TAEXELCC010008, TAEXELCU280008, TAEXELCL020008, TAEXELCL030008, TAEXELCL040008, TAEXELCL050008 FS+30d |  | 77d |
| TACOFTFT0011 |  | Telecommunications Networks | 7d | 2027-06-07 | 2027-06-14 | TAEXTCCU280004, TAEXTCCL020004, TAEXTCCL030004, TAEXTCCL040004, TAEXTCCL050004 FS+7d, TAEXTCCC010004 |  | 40d |
| TACOFTFT0016 |  | Storm Water Drainage Networks | 7d | 2027-06-26 | 2027-07-03 | TAEXSTCC010007, TAEXSTCU280007, TAEXSTCL020007, TAEXSTCL030007, TAEXSTCL050007 FS+15d, TAEXSTCL0400071 |  | 35d |
| TACOFTFT0013 |  | Potable Water Networks | 4d | 2027-07-08 | 2027-07-12 | TAEXPTCC010008, TAEXPTCL020008, TAEXPTCL030007, TAEXPTCL040008, TAEXPTCL050008, TAEXPTCL010008 FS+4d |  | 41d |
| TACOFTFT0014 |  | TSE Networks | 4d | 2027-07-13 | 2027-07-17 | TAEXTSCC010007, TAEXTSCU280007, TAEXTSCL020007, TAEXTSCL030007, TAEXTSCL040007, TAEXTSCL050007 FS+25d |  | 39d |
| TACOFTFT0009 |  | Road Works | 7d | 2027-07-26 | 2027-08-02 | TAEXRDCC010012, TAEXRDCU280006, TAEXRDC L020012, TAEXRDCL030012, TAEXRDCL040012, TAEXRDCL050012, TACOFTFT0001 |  | 0d |
| TACOFTFT0012 |  | CCTV Networks | 7d | 2027-08-17 | 2027-08-24 | TAEXCCCC010004, TAEXCCCU280004, TAEXCCCL020004, TAEXCCCL030004, TAEXCCCL040004, TAEXCCCL050004 FS+4d |  | 0d |
|  | 3 | **Final Test & commisionning Zone 3** |  | 2027-07-04 | 2027-09-03 |  |  |  |
| TACOFTFT0024 |  | Storm Water Drainage Networks | 7d | 2027-07-04 | 2027-07-11 | TAEXSTCL010007, TAEXSTCL060007, TAEXSTCL070007, TAEXSTCL080007, TAEXSTCL090007 FS+5d, TAEXSTCU120007, TAEXSTCU320007, TAEXSTCU330007, TACOFTFT0016 |  | 35d |
| TACOFTFT0022 |  | TSE Networks | 3d | 2027-07-19 | 2027-07-21 | TAEXTSCL010007, TAEXTSCL060007 FS+16d, TAEXTSCL070007, TAEXTSCL080007, TAEXTSCL090007, TAEXTSCU120007, TAEXTSCU200007, TAEXTSCU290007 FS+7d, TAEXTSCU320007, TAEXTSCU330007, TACOFTFT0014 |  | 38d |
| TACOFTFT0023 |  | Sewerage Networks | 5d | 2027-07-28 | 2027-08-02 | TAEXSWCL010006, TAEXSWCL060006, TAEXSWCL070006, TAEXSWCL080006, TAEXSWCL090006, TAEXSWCU120006, TAEXSWCU200006, TAEXSWCU330006, TACOFTFT0015 |  | 2d |
| TACOFTFT0019 |  | Telecommunications Networks | 7d | 2027-08-01 | 2027-08-08 | TAEXTCCL010004, TAEXTCCL060004, TAEXTCCL070004, TAEXTCCL080004, TAEXTCCL090004, TAEXTCCU120004, TAEXTCCU290004, TAEXTCCU330004, TACOFTFT0011 |  | 0d |
| TACOFTFT0018 |  | Electrical NetWorks | 7d | 2027-08-02 | 2027-08-09 | TAEXELCL010008, TAEXELCL060008, TAEXELCL070008, TAEXELCL080008, TAEXELCL090008, TAEXELCU060008, TAEXELCU070008, TAEXELCU080008, TAEXELCU090008, TAEXELCU120008, TAEXELCU140008, TAEXELCU200008, TAEXELCU290008, TAEXELCU320008, TAEXELCU330008, TACOFTFT0010 |  | 0d |
| TACOFTFT0017 |  | Road Works | 3d | 2027-08-03 | 2027-08-05 | TAEXRDCL010012, TAEXRDCL060012, TAEXRDCL070012, TAEXRDCL080012, TAEXRDCL090012, TAEXRDCU120006, TAEXRDCU290009, TAEXRDCU330006, TACOFTFT0009 |  | 0d |
| TACOFTFT0021 |  | Potable Water Networks | 5d | 2027-08-16 | 2027-08-21 | TAEXPTCL010008, TAEXPTCL060008, TAEXPTCL070008, TAEXPTCL080008, TAEXPTCU120008, TAEXPTCU200008, TAEXPTCU290008, TAEXPTCU320008, TAEXPTCU330008, TACOFTFT0013 |  | 12d |
| TACOFTFT0020 |  | CCTV Networks | 9d | 2027-08-25 | 2027-09-03 | TAEXCCCL010004, TAEXCCCL060004, TAEXCCCL070004, TAEXCCCL080004, TAEXCCCL090004, TAEXCCCU060004, TAEXCCCU070004, TAEXCCCU080004, TAEXCCCU090004, TAEXCCCU120004, TAEXCCCU140004, TAEXCCCU180004 FS+12d, TAEXCCCU200004, TAEXCCCU290004, TAEXCCCU330004, TACOFTFT0012 |  | 0d |
|  | 2 | **AS BUILT DRAWINGS** |  | 2027-07-19 | 2027-08-16 |  |  |  |
|  | 1 | **AS BUILT DRAWINGS Zone 1** |  | 2027-07-19 | 2027-08-16 |  |  |  |
| TACOFTAD0006 |  | TSE Networks | 10d | 2027-07-19 | 2027-07-29 | TAEXTSCC010007, TAEXTSCC020007, TAEXTSCC030005, TAEXTSCU210007, TAEXTSCL100007, TAEXTSCU280007, TAEXTSCL020007, TAEXTSCL030007, TAEXTSCL040007, TAEXTSCL050007, TAEXTSCU200007, TAEXTSCU320007, TAEXTSCU330007, TAEXTSCU120007, TAEXTSCL010007 FF, TAEXTSCL060007 FF, TAEXTSCL070007, TAEXTSCL080007, TAEXTSCL090007, TAEXTSCU290007 |  | 15d |
| TACOFTAD0007 |  | Sewerage Networks | 10d | 2027-08-03 | 2027-08-14 | TAEXSWCU210006, TAEXSWCL100006, TAEXSWCC010006, TAEXSWCL030006 FF, TAEXSWCL040006 FF, TAEXSWCU200006, TAEXSWCU330006, TAEXSWCU120006, TAEXSWCL010006, TAEXSWCL060006, TAEXSWCL070006, TAEXSWCL080006, TAEXSWCL090006, TAEXSWCC0200061, TACOFTFT0023 |  | 2d |
| TACOFTAD0008 |  | Storm Water Drainage Networks | 10d | 2027-08-03 | 2027-08-14 | TAEXSTCL050007, TAEXSTCU320007 FF, TAEXSTCU330007 FF, TAEXSTCU120007 FF, TAEXSTCL010007, TAEXSTCL060007, TAEXSTCL070007, TAEXSTCL080007, TAEXSTCL090007, TACOFTAD0007 SS, TAEXSTCC0100091 FF, TAEXSTCC0200071 |  | 2d |
| TACOFTAD0005 |  | Potable Water Networks | 10d | 2027-08-04 | 2027-08-15 | TAEXPTCC010008, TAEXPTCC020008, TAEXPTCC030007 FF, TAEXPTCU210008, TAEXPTCL100008, TAEXPTCU280008, TAEXPTCL020008, TAEXPTCL030008, TAEXPTCL040008, TAEXPTCL050008, TAEXPTCU200008, TAEXPTCU320008, TAEXPTCU330008, TAEXPTCU120008, TAEXPTCL010008, TAEXPTCL060008, TAEXPTCL070008, TAEXPTCL080008, TAEXPTCL090008, TAEXPTCU290008 FF |  | 1d |
| TACOFTAD0001 |  | Road Works | 3d | 2027-08-07 | 2027-08-09 | TAEXRDCC020012, TAEXRDCC030012, TAEXRDCU210006, TAEXRDCL100012, TACOFTFT0017 |  | 0d |
| TACOFTAD0003 |  | Telecommunications Networks | 7d | 2027-08-09 | 2027-08-16 | TAEXTCCC020004, TAEXTCCC030004, TAEXTCCU210004, TAEXTCCL100004, TAEXTCCC010004, TAEXTCCU280004, TAEXTCCL020004, TAEXTCCL030004, TAEXTCCL040004, TAEXTCCL050004, TAEXTCCU330004, TAEXTCCU120004, TAEXTCCL010004, TAEXTCCL060004, TAEXTCCL070004, TAEXTCCL080004, TAEXTCCL090004, TAEXTCCU290004, TACOFTFT0019 |  | 0d |
| TACOFTAD0002 |  | Electrical NetWorks | 6d | 2027-08-10 | 2027-08-16 | TAEXELCC020008, TAEXELCC030008, TAEXELCU210009, TAEXELCU260008, TAEXELCL100009, TAEXELCC010008, TAEXELCU280008, TAEXELCL020008, TAEXELCL030008, TAEXELCL040009, TAEXELCL050008, TAEXELCU200009, TAEXELCU320008, TAEXELCU330008, TAEXELCU120008, TAEXELCL010008, TAEXELCL060008, TAEXELCL070008, TAEXELCL080009, TAEXELCL090008, TAEXELCU290008, TAEXELCU140008, TAEXELCU060008, TAEXELCU070008, TAEXELCU080008, TAEXELCU090008, TACOFTFT0018 |  | 0d |
| TACOFTAD0004 |  | CCTV Networks | 4d | 2027-08-12 | 2027-08-16 | TAEXCCCC030004, TAEXCCCU210004, TAEXCCCU260004, TAEXCCCL100004, TAEXCCCC010004, TAEXCCCU280004, TAEXCCCL020004, TAEXCCCL030004, TAEXCCCL040004, TAEXCCCL050004, TAEXCCCC020004, TAEXCCCU200004, TAEXCCCU320004, TAEXCCCU330004, TAEXCCCU120004, TAEXCCCL010004, TAEXCCCL060004, TAEXCCCL070004, TAEXCCCL080004, TAEXCCCL090004, TAEXCCCU290004, TAEXCCCU140004, TAEXCCCU060004, TAEXCCCU070004, TAEXCCCU080004, TAEXCCCU090004 FF, TAEXCCCU180004 |  | 0d |
|  | 2 | **AS BUILT DRAWINGS Zone 2** |  | 2027-07-19 | 2027-08-16 |  |  |  |
| TACOFTAD0014 |  | TSE Networks | 10d | 2027-07-19 | 2027-07-29 | TACOFTAD0006 FF |  | 15d |
| TACOFTAD0015 |  | Sewerage Networks | 15d | 2027-07-28 | 2027-08-14 | TACOFTAD0007 FF |  | 2d |
| TACOFTAD0016 |  | Storm Water Drainage Networks | 15d | 2027-07-28 | 2027-08-14 | TACOFTAD0008 FF |  | 2d |
| TACOFTAD0013 |  | Potable Water Networks | 10d | 2027-08-04 | 2027-08-15 | TACOFTAD0005 FF |  | 1d |
| TACOFTAD0010 |  | Electrical NetWorks | 7d | 2027-08-09 | 2027-08-16 | TACOFTAD0002 FF |  | 0d |
| TACOFTAD0011 |  | Telecommunications Networks | 7d | 2027-08-09 | 2027-08-16 | TACOFTAD0003 FF |  | 0d |
| TACOFTAD0009 |  | Road Works | 3d | 2027-08-10 | 2027-08-12 | TACOFTAD0001, TAEXRDCC010012, TAEXRDCU280006, TAEXRDC L020012, TAEXRDCL030012, TAEXRDCL040012, TAEXRDCL050012 |  | 0d |
| TACOFTAD0012 |  | CCTV Networks | 4d | 2027-08-12 | 2027-08-16 | TACOFTAD0004 FF |  | 0d |
|  | 3 | **AS BUILT DRAWINGS Zone 3** |  | 2027-07-19 | 2027-08-16 |  |  |  |
| TACOFTAD0022 |  | TSE Networks | 10d | 2027-07-19 | 2027-07-29 | TACOFTAD0014 FF |  | 15d |
| TACOFTAD0023 |  | Sewerage Networks | 10d | 2027-08-03 | 2027-08-14 | TACOFTAD0015 FF |  | 2d |
| TACOFTAD0024 |  | Storm Water Drainage Networks | 10d | 2027-08-03 | 2027-08-14 | TACOFTAD0016 FF |  | 2d |
| TACOFTAD0021 |  | Potable Water Networks | 10d | 2027-08-04 | 2027-08-15 | TACOFTAD0013 FF |  | 1d |
| TACOFTAD0018 |  | Electrical NetWorks | 7d | 2027-08-09 | 2027-08-16 | TACOFTAD0010 FF |  | 0d |
| TACOFTAD0019 |  | Telecommunications Networks | 7d | 2027-08-09 | 2027-08-16 | TACOFTAD0011 FF |  | 0d |
| TACOFTAD0020 |  | CCTV Networks | 5d | 2027-08-11 | 2027-08-16 | TACOFTAD0012 FF |  | 0d |
| TACOFTAD0017 |  | Road Works | 3d | 2027-08-14 | 2027-08-16 | TACOFTAD0009, TAEXRDCL010012, TAEXRDCL060012, TAEXRDCL070012, TAEXRDCL080012, TAEXRDCL090012, TAEXRDCU120006, TAEXRDCU290009, TAEXRDCU330006 |  | 0d |

| ID | WBS | Task | Duration | Start | Finish | Predecessors | Total float |
| --- | --- | --- | --- | --- | --- | --- | --- |
|  | 1 | **DEMOBILIZATION** |  | 2027-08-17 | 2027-09-03 |  |  |
| TAPCDZ00000001 |  | Demobilization Manpower | 6d | 2027-08-17 | 2027-08-23 | TACOFTAD0001 FF, TACOFTAD0002, TACOFTAD0003, TACOFTAD0004, TACOFTAD0005, TACOFTAD0006, TACOFTAD0007, TACOFTAD0008, TACOFTFT0002, TACOFTFT0003, TACOFTFT0004 FF, TACOFTFT0005 FF, TACOFTFT0006 FF, TACOFTFT0007 FF, TACOFTFT0008 FF, TACOFTFT0024 FF+2d, TACOFTAD0016, TACOFTAD0024, TACOFTAD0017, TACOFTAD0018, TACOFTAD0019, TACOFTAD0020, TACOFTAD0021, TACOFTAD0022, TACOFTAD0023, TAGNZM0002 SS, TAGNZM0003 SS | 0d |
| TAPCDZ00000002 |  | Remove Offices and Structures | 5d | 2027-08-24 | 2027-08-29 | TAPCDZ00000001, TAGNMZ9 | 0d |
| TAPCDZ00000022 |  | Restore Ground Surfaces | 6d | 2027-08-29 | 2027-09-03 | TAPCDZ00000012 FF | 0d |
| TAPCDZ00000012 |  | Demobilize Equipment from Site | 5d | 2027-08-30 | 2027-09-03 | TAPCDZ00000002, TAPCDZ00000002 FF | 0d |
| TAPCDZ00000032 |  | Final Handover | 0d | 2027-09-03 | 2027-09-03 | TAPCDZ00000022 FF | 0d |

## Version 2 (data date 2026-10-05, saved 2026-10-06, file 5-10-2026.xer)

Last finish 2027-09-03 → 2027-10-02 (+29d). Complete tasks 377 → 564.

Changed:

| ID | Task | Start | Finish | Complete | Total float | Predecessors |
| --- | --- | --- | --- | --- | --- | --- |
| GENERAL | **MILESTONS** |  | 2027-09-03 → 2027-10-02 (+29d) |  |  |  |
| 2 | **CONTRACTUAL MILESTONES** |  | 2027-09-03 → 2027-10-02 (+29d) |  |  |  |
| TAGNCM0003 | Project finish | 2027-09-03 → 2027-10-02 (+29d) | 2027-09-03 → 2027-10-02 (+29d) |  | 0d → -24.67d |  |
| 1 | **NET WORK MILESTONES** |  | 2027-09-03 → 2027-10-02 (+29d) |  |  |  |
| TAGNML0006 | Start Teleommunications Works | 2026-06-03 → 2026-06-18 A (+15d) | 2026-06-03 → 2026-06-18 A (+15d) | 0% → 100% | 142d → none |  |
| TAGNML0008 | Start CCTV Works | 2026-06-03 → 2026-10-05 (+124d) | 2026-06-03 → 2026-10-05 (+124d) |  | 97d → 4d |  |
| TAGNML0019 | Finish Sewerage Networks | 2027-08-14 → 2027-03-20 (-147d) | 2027-08-14 → 2027-03-20 (-147d) |  | 18d → 144.78d |  |
| TAGNML0018 | Finish TSE Networks | 2027-07-21 → 2027-06-03 (-48d) | 2027-07-21 → 2027-06-03 (-48d) |  | 38d → 79.67d |  |
| TAGNML0017 | Finish Potable Water Networks | 2027-08-21 → 2027-06-03 (-79d) | 2027-08-21 → 2027-06-03 (-79d) |  | 12d → 79.36d |  |
| TAGNML0020 | Finish Storm Water Drainage Networks | 2027-08-14 → 2027-08-04 (-10d) | 2027-08-14 → 2027-08-04 (-10d) |  | 18d → 26.64d |  |
| TAGNML0032 | Finish works for Amana Road | 2027-08-23 → 2027-08-16 (-7d) | 2027-08-23 → 2027-08-16 (-7d) |  | 10d → 16.08d |  |
| TAGNML0015 | Finish Teleommunications Works | 2027-08-16 → 2027-08-26 (+10d) | 2027-08-16 → 2027-08-26 (+10d) |  | 16d → 7.73d |  |
| TAGNML0016 | Finish CCTV Works | 2027-09-03 → 2027-09-04 (+1d) | 2027-09-03 → 2027-09-04 (+1d) |  | 0d → -0.55d |  |
| TAGNML0013 | Finish Road Works | 2027-09-02 → 2027-09-29 (+27d) | 2027-09-02 → 2027-09-29 (+27d) |  | 1d → -22.81d |  |
| TAGNML0014 | Finish Electrical Works | 2027-09-03 → 2027-10-02 (+29d) | 2027-09-03 → 2027-10-02 (+29d) |  | 0d → -24.62d |  |
| 4 | **ZONES MILESTONES** |  | 2027-08-15 → 2027-07-18 (-28d) |  |  |  |
| TAGNZM0006 | Finish Zone 3 | 2027-08-15 → 2027-05-29 (-78d) | 2027-08-15 → 2027-05-29 (-78d) |  | 17d → 84.36d |  |
| TAGNZM0004 | Finish Zone 1 | 2027-06-05 → 2027-06-21 (+16d) | 2027-06-05 → 2027-06-21 (+16d) |  | 78d → 64.1d |  |
| TAGNZM0005 | Finish Zone 2 | 2027-07-25 → 2027-07-18 (-7d) | 2027-07-25 → 2027-07-18 (-7d) |  | 10d → 16.08d |  |
| 3 | **PRELIMINARY SUBMITTALS** |  | 2026-08-11 → 2026-11-03 (+84d) |  |  |  |
| TAGNPS0002 | Shop drawing complete |  | 2026-08-11 → 2026-11-03 (+84d) | 0% → 85% | 61d → 11.54d |  |
| 5 | **MOBILIZATION** |  | 2027-08-23 → 2027-08-30 (+7d) |  |  |  |
| 2 | **Site Facilites and Offices** |  | 2027-08-23 → 2027-08-30 (+7d) |  |  |  |
| TAGNMZ9 | Office Operation part 01 | 2026-06-03 → 2026-06-21 A (+18d) | 2027-08-23 → 2027-08-30 (+7d) | 0% → 26% | 0d → -6d |  |
| 17 | **PROCUREMENT** |  | 2027-09-02 → 2027-09-29 (+27d) |  |  |  |
| 8 | **Material Purchase Order** |  | 2026-09-08 → 2026-07-25 (-45d) |  |  |  |
| 1 | **Material Purchase Order for Electrical Works** |  | 2026-06-10 → 2026-07-02 (+22d) |  |  |  |
| TAPQPOEL1 | Electrical material Approved suppliers and issue po Part 01 | 2026-06-03 → 2026-06-20 A (+17d) | 2026-06-10 → 2026-07-02 A (+22d) | 0% → 100% | 0d → none |  |
| 2 | **Material Purchase Order for Telecommunication** | 2026-06-03 → 2026-06-20 (+17d) | 2026-07-15 → 2026-07-22 (+7d) |  |  |  |
| TAPQPOTC0001 | HDPE material Approved suppliers and issue po | 2026-06-03 → 2026-06-20 A (+17d) | 2026-07-15 → 2026-07-22 A (+7d) | 0% → 100% | 0d → none |  |
| 3 | **Material Purchase Order for CCTV Networks** | 2026-06-29 → 2026-07-16 (+17d) | 2026-09-08 → 2026-07-25 (-45d) |  |  |  |
| TAPQPOCC0001 | CCTV material Approved suppliers and issue po | 2026-06-29 → 2026-07-16 A (+17d) | 2026-09-08 → 2026-07-25 A (-45d) | 0% → 100% | 13d → none |  |
| 17 | **Material Fabrication and Delivery** |  | 2027-09-02 → 2027-09-29 (+27d) |  |  |  |
| 1 | **Material Fabrication and Delivery for Road Works** |  | 2027-09-02 → 2027-09-29 (+27d) |  |  |  |
| TAPQDVRD00011 | ABC Delivery to Site Part 01 | 2026-06-03 → 2026-06-15 A (+12d) | 2026-08-24 → 2026-11-16 (+84d) | 0% → 49% | 0d → -24.67d |  |
| TAPQDVRD00021 | BBC Base Course Delivery to Site Part 01 | 2027-04-19 → 2026-06-15 A (-308d) | 2027-07-13 → 2027-07-06 (-7d) | 0% → 27% | 0d → 6.08d |  |
| TAPQDVRD00041 | Precast Concrete Curbstone Delivery to Site part 01 | 2027-02-28 → 2026-07-29 A (-214d) | 2027-05-08 → 2027-07-18 (+71d) | 0% → 9% | 2d → -22.81d | TAPQDVRD00011 FS+160d, TAPQDVRD0004 → TAPQDVRD00011 FS+155d, TAPQDVRD0004 |
| TAPQDVRD0003 | BWC Asphalt Wearing Course Delivery to Site | 2027-07-14 → 2027-07-06 (-8d) | 2027-08-23 → 2027-08-16 (-7d) |  | 1d → 7.08d |  |
| TAPQDVRD00081 | Marking for Road delivery to site Part 01 | 2027-07-14 → 2027-07-06 (-8d) | 2027-07-19 → 2027-07-12 (-7d) |  | 0d → 6.08d |  |
| TAPQDVRD0005 | Precast Concrete Interlocking Delivery to Site | 2027-07-18 → 2027-08-15 (+28d) | 2027-09-01 → 2027-09-29 (+28d) |  | 2d → -22.81d | TAPQDVRD00041 FS+60d → TAPQDVRD00041 FS+24d |
| TAPQDVRD00091 | Trafic Sinage delivery to site Part 01 | 2027-08-24 → 2027-08-16 (-8d) | 2027-09-02 → 2027-08-26 (-7d) |  | 1d → 7.08d |  |
| 10 | **Material Fabrication and Delivery for Electrical Works** |  | 2027-04-21 → 2027-03-31 (-21d) |  |  |  |
| TAPQDVEL0002 | cables (LV,MV )Delivery to Site) | 2026-08-20 → 2026-06-09 A (-72d) | 2026-10-28 → 2026-12-16 (+49d) | 0% → 58% | 0d → -8.27d |  |
| TAPQDVEL0004 | Substations & RMU ,ets.. Delivery to Site | 2027-01-07 → 2026-07-12 A (-179d) | 2027-04-21 → 2026-09-02 A (-231d) | 0% → 100% | 85d → none |  |
| TAPQDVEL00011 | Pipes ,Fittings Delivery to Site Part 01 | 2026-06-11 → 2026-07-18 A (+37d) | 2026-07-09 → 2026-10-07 (+90d) | 0% → 89% | 0d → -8.27d |  |
| TAPQDVEL0003 | Poles & Luminares Delivery to Site | 2026-10-29 → 2026-12-16 (+48d) | 2027-01-06 → 2027-02-24 (+49d) |  | 0d → -8.27d |  |
| TAPQDVEL0005 | Pre cast Drawpits and Pole Foundation Delivery | 2027-01-14 → 2027-02-13 (+30d) | 2027-03-01 → 2027-03-31 (+30d) |  | 0d → -8.27d | TAPQDVEL0003 FF+46d → TAPQDVEL0003 FF+30d |
| 11 | **Material Fabrication and Delivery for Telecommunication** | 2026-07-16 → 2026-06-14 (-32d) | 2026-09-23 → 2026-10-13 (+20d) |  |  |  |
| TAPQDVTC0001 | Telecommunication Material (Pipes,,ets) Delivery | 2026-07-16 → 2026-06-14 A (-32d) | 2026-09-23 → 2026-10-13 (+20d) | 0% → 92% | 0d → -5.61d |  |
| 12 | **Material Fabrication and Delivery for CCTV Networks** | 2026-09-24 → 2026-09-19 (-5d) | 2026-12-02 → 2026-11-17 (-15d) |  |  |  |
| TAPQDVCC0001 | CCTV Material Cabls,Camera,Devices,ets) Delivery | 2026-09-24 → 2026-09-19 A (-5d) | 2026-12-02 → 2026-11-17 (-15d) | 0% → 50% | 0d → -3.55d |  |
| 13 | **Material Fabrication and Delivery for Potable Networks** |  | 2026-11-21 → 2026-09-13 (-69d) |  |  |  |
| TAPQDVPT00031 | Fire Hydrent Delivery to Site Part 01 | 2026-10-08 → 2026-06-09 A (-121d) | 2026-11-21 → 2026-09-13 A (-69d) | 0% → 100% | 1d → none |  |
| TAPQDVPT00011 | PE Pipes Delivery Part 01 | 2026-07-13 → 2026-06-15 A (-28d) | 2026-08-16 → 2026-08-30 A (+14d) | 0% → 100% | 0d → none |  |
| TAPQDVPT00021 | Valves Delivery to Site Part 01 | 2026-08-17 → 2026-07-16 A (-32d) | 2026-10-07 → 2026-08-30 A (-38d) | 0% → 100% | 1d → none |  |
| 14 | **Material Fabrication and Delivery for TSE Networks** |  | 2027-03-14 → 2026-08-30 (-196d) |  |  |  |
| TAPQDVTS00011 | PE Pipes Delivery to Site Part 01 | 2026-08-17 → 2026-06-15 A (-63d) | 2026-11-29 → 2026-08-30 A (-91d) | 0% → 100% | 2d → none |  |
| TAPQDVTS00021 | Valves Delivery to Site Part 01 | 2026-11-30 → 2026-07-16 A (-137d) | 2027-03-14 → 2026-08-30 A (-196d) | 0% → 100% | 77d → none |  |
| 15 | **Material Fabrication and Delivery for Sewerage Networks** |  | 2026-08-23 → 2026-11-22 (+91d) |  |  |  |
| TAPQDVSW00011 | GRP Pipes Delivery to Site Part 01 | 2026-06-03 → 2026-07-16 A (+43d) | 2026-07-13 → 2026-10-12 (+91d) | 0% → 81% | 80d → 7.24d |  |
| TAPQDVSW00021 | Fiberglass Manholes,ets) Delivery Part 01 | 2026-07-14 → 2026-10-12 (+90d) | 2026-08-23 → 2026-11-22 (+91d) |  | 80d → 7.24d |  |
| 16 | **Material Fabrication and Delivery for Storm Networks** |  | 2027-02-02 → 2026-11-28 (-66d) |  |  |  |
| TAPQDVST00051 | Box Culvert Delivery part 01 | 2026-08-24 → 2026-06-15 A (-70d) | 2026-09-28 → 2026-11-07 (+40d) | 0% → 30% | 0d → 2.35d |  |
| TAPQDVST0009 | Catchbasin Delivery to Site | 2026-06-15 A | 2026-08-23 → 2026-10-18 (+56d) | 0% → 81% | 53d → 43.49d |  |
| TAPQDVST00101 | Riprab for Dike Delivery to Site part 01 | 2026-06-03 → 2026-06-15 A (+12d) | 2026-08-11 → 2026-08-02 A (-9d) | 0% → 100% | 89d → none |  |
| TAPQDVST00071 | RIprab,Sand,Marl gravel Delivery for Ponds part 01 | 2026-10-21 → 2026-06-28 A (-115d) | 2027-02-02 → 2026-10-21 (-104d) | 0% → 90% | 89d → 224.6d |  |
| TAPQDVST00011 | UPVC Pipes with Fittings Delivery Part 01 | 2026-06-03 → 2026-07-02 A (+29d) | 2026-06-14 → 2026-07-05 A (+21d) | 0% → 100% | 0d → none |  |
| TAPQDVST00061 | Manholes,ets Delivery part 01 | 2026-09-29 → 2026-07-12 A (-79d) | 2026-10-19 → 2026-11-28 (+40d) | 0% → 2% | 0d → 2.35d |  |
| TAPQDVST00041 | GRP Pipes with Fittings Delivery Part 4 | 2026-06-15 → 2026-07-16 A (+31d) | 2026-08-23 → 2026-10-13 (+51d) | 0% → 88% | 0d → 2.35d |  |
| 1 | **CONSTRUCTION WORKS** |  | 2027-09-03 → 2027-10-02 (+29d) |  |  |  |

| ID | Task | Start | Finish | Complete | Total float |
| --- | --- | --- | --- | --- | --- |
| 9 | **ZONE 1** |  | 2027-09-03 → 2027-10-02 (+29d) |  |  |
| 1 | **Collector Road 02** |  | 2027-06-23 → 2027-06-21 (-2d) |  |  |
| 10 | **Road Works** |  | 2027-06-05 → 2027-06-21 (+16d) |  |  |
| TAEXRDCC020004 | ABC aggregate Base Course Works | 2027-03-25 → 2026-09-20 A (-186d) | 2027-04-12 → 2027-04-28 (+16d) | 0% → 16% | 0d → 6.08d |
| TAEXRDCC020005 | MBC1 layer | 2027-04-13 → 2026-10-04 A (-191d) | 2027-04-13 → 2027-04-29 (+16d) | 0% → 9% | 0d → 6.08d |
| TAEXRDCC0200021 | Backfilling Works for Road Part 01 | 2027-03-07 → 2027-03-25 (+18d) | 2027-03-15 → 2027-04-04 (+20d) |  | 0d → 6.08d |
| TAEXRDCC0200031 | Subgrade Works Part 01 | 2027-03-16 → 2027-04-04 (+19d) | 2027-03-24 → 2027-04-13 (+20d) |  | 0d → 6.08d |
| TAEXRDCC020006 | BBC Base Course | 2027-04-14 → 2027-04-29 (+15d) | 2027-04-18 → 2027-05-04 (+16d) |  | 0d → 6.08d |
| TAEXRDCC020008 | Precast Concret Kerps | 2027-04-19 → 2027-05-04 (+15d) | 2027-05-01 → 2027-05-17 (+16d) |  | 28d → 21.1d |
| TAEXRDCC020007 | BWC Asphalt Wearing Course with RC | 2027-05-02 → 2027-05-17 (+15d) | 2027-05-03 → 2027-05-19 (+16d) |  | 39d → 25.1d |
| TAEXRDCC020009 | Precast Interlock Works | 2027-05-04 → 2027-05-19 (+15d) | 2027-05-24 → 2027-06-09 (+16d) |  | 39d → 25.1d |
| TAEXRDCC020010 | Stone Paving works | 2027-05-25 → 2027-06-09 (+15d) | 2027-06-01 → 2027-06-17 (+16d) |  | 39d → 25.1d |
| TAEXRDCC020011 | Road Marking | 2027-06-02 → 2027-06-17 (+15d) | 2027-06-03 → 2027-06-20 (+17d) |  | 39d → 25.1d |
| TAEXRDCC020012 | Traffic Sinage | 2027-06-05 → 2027-06-20 (+15d) | 2027-06-05 → 2027-06-21 (+16d) |  | 39d → 25.1d |
| 11 | **Electrical Works** | 2026-09-17 → 2026-09-06 (-11d) | 2027-03-22 → 2027-04-21 (+30d) |  |  |
| TAEXELCC020003 | Road Crossing Ducts | 2027-01-31 → 2026-09-06 A (-147d) | 2027-02-03 → 2027-02-23 (+20d) | 0% → 60% | 0d → 6.08d |
| TAEXELCC020002 | Drawpit and PVC Pipes Installation | 2027-01-14 → 2026-09-20 A (-116d) | 2027-01-30 → 2027-02-21 (+22d) | 0% → 50% | 0d → 6.08d |
| TAEXELCC020001 | Trench Cut off | 2026-09-17 → 2026-11-28 (+72d) | 2026-10-10 → 2026-12-21 (+72d) |  | 82d → 52.82d |
| TAEXELCC020004 | Trench Backfilling | 2027-02-04 → 2027-02-23 (+19d) | 2027-02-24 → 2027-03-16 (+20d) |  | 0d → 6.08d |
| TAEXELCC020005 | Cables Pulling | 2027-02-25 → 2027-03-16 (+19d) | 2027-03-06 → 2027-03-25 (+19d) |  | 0d → 6.08d |
| TAEXELCC020006 | Poles RC Foundation | 2027-03-02 → 2027-03-31 (+29d) | 2027-03-08 → 2027-04-07 (+30d) |  | 82d → 56.05d |
| TAEXELCC020007 | Earthing cables | 2027-03-09 → 2027-04-07 (+29d) | 2027-03-20 → 2027-04-19 (+30d) |  | 82d → 56.05d |
| TAEXELCC020008 | Lighting Pole Installation with Luminares | 2027-03-09 → 2027-04-07 (+29d) | 2027-03-22 → 2027-04-21 (+30d) |  | 89d → 63.05d |
| 12 | **Telecommunication Works** | 2026-08-09 → 2026-09-20 (+42d) | 2027-04-05 → 2027-04-28 (+23d) |  |  |
| TAEXTCCC020002 | Drawpit and PVC Pipes Installation | 2027-03-02 → 2026-09-20 A (-163d) | 2027-03-10 → 2027-04-05 (+26d) | 0% → 50% | 0d → -8.27d |
| TAEXTCCC020003 | Road Crossing Ducts | 2027-03-11 → 2026-09-20 A (-172d) | 2027-03-15 → 2027-04-07 (+23d) | 0% → 50% | 107d → 87.05d |
| TAEXTCCC020001 | Trench Cut off | 2026-08-09 → 2026-10-07 (+59d) | 2026-08-31 → 2026-10-31 (+61d) |  | 45d → -5.61d |
| TAEXTCCC020004 | Trench Backfilling | 2027-03-16 → 2027-04-07 (+22d) | 2027-04-05 → 2027-04-28 (+23d) |  | 107d → 87.05d |
| 13 | **CCTV Works** | 2027-01-24 → 2027-02-11 (+18d) | 2027-04-03 → 2027-04-22 (+19d) |  |  |
| TAEXCCCC020001 | Pipe Installation with manhole | 2027-01-24 → 2027-02-11 (+18d) | 2027-02-03 → 2027-02-23 (+20d) |  | 0d → -3.55d |
| TAEXCCCC020002 | CCTV Swiches Lighting panels Installation | 2027-02-04 → 2027-02-23 (+19d) | 2027-02-24 → 2027-03-16 (+20d) |  | 0d → -3.55d |
| TAEXCCCC020003 | Cable laying and connected with Panels | 2027-02-25 → 2027-03-16 (+19d) | 2027-03-13 → 2027-04-01 (+19d) |  | 112d → 95.45d |
| TAEXCCCC020004 | Pole Installation with IP Outdoor CCTV POE Camera | 2027-03-14 → 2027-04-01 (+18d) | 2027-04-03 → 2027-04-22 (+19d) |  | 112d → 95.45d |
| 14 | **Potable Networks** | 2026-12-14 → 2026-06-30 (-167d) | 2027-06-16 → 2027-02-20 (-116d) |  |  |
| TAEXPTCC020001 | Excavation works for Trench | 2026-12-14 → 2026-06-30 A (-167d) | 2027-01-05 → 2026-07-19 A (-170d) | 0% → 100% | 98d → none |
| TAEXPTCC020002 | Bedding Works | 2027-01-06 → 2026-07-11 A (-179d) | 2027-01-07 → 2026-08-11 A (-149d) | 0% → 100% | 98d → none |
| TAEXPTCC020003 | Install Pipes & Fittings | 2027-01-09 → 2026-07-12 A (-181d) | 2027-01-26 → 2026-08-10 A (-169d) | 0% → 100% | 98d → none |
| TAEXPTCC020005 | Install Valves with fittings | 2027-05-10 → 2026-07-28 A (-286d) | 2027-05-18 → 2027-02-13 (-94d) | 0% → 95% | 20d → 122.9d |
| TAEXPTCC020004 | Backfilling Works for Trench | 2027-01-27 → 2026-08-11 A (-169d) | 2027-02-16 → 2026-08-30 A (-170d) | 0% → 100% | 98d → none |
| TAEXPTCC020007 | Valve Chamber works | 2027-05-29 → 2026-08-29 A (-273d) | 2027-06-09 → 2027-02-20 (-109d) | 0% → 95% | 20d → 117.13d |
| TAEXPTCC020006 | Install fire hydrent | 2027-05-19 → 2026-09-02 A (-259d) | 2027-05-27 → 2027-02-20 (-96d) | 0% → 95% | 20d → 117.13d |
| TAEXPTCC020008 | Inspection Test | 2027-06-10 → 2026-10-03 A (-250d) | 2027-06-16 → 2026-10-04 A (-255d) | 0% → 100% | 36d → none |
| 15 | **TSE Networks** |  | 2027-06-23 → 2026-12-30 (-175d) |  |  |
| TAEXTSCC0200031 | Install Pipes & Fittings Part 01 | 2026-12-31 → 2026-06-16 A (-198d) | 2027-01-09 → 2026-06-24 A (-199d) | 0% → 100% | 134d → none |
| TAEXTSCC0200021 | Bedding Works Part 01 | 2026-12-29 → 2026-06-16 A (-196d) | 2026-12-30 → 2026-06-24 A (-189d) | 0% → 100% | 134d → none |
| TAEXTSCC020004 | Backfilling Works for Trench | 2027-01-10 → 2026-06-18 A (-206d) | 2027-01-30 → 2026-08-09 A (-174d) | 0% → 100% | 134d → none |
| TAEXTSCC020006 | Valve Chamber works | 2027-01-31 → 2026-08-13 A (-171d) | 2027-02-22 → 2026-12-30 (-54d) | 0% → 95% | 134d → 186.86d |
| TAEXTSCC020005 | Install Valves with fittings | 2027-01-21 → 2026-08-29 A (-145d) | 2027-01-30 → 2026-12-29 (-32d) | 0% → 95% | 134d → 186.86d |
| TAEXTSCC020007 | Inspection Test | 2027-06-17 → 2026-09-06 A (-284d) | 2027-06-23 → 2026-10-04 A (-262d) | 0% → 100% | 36d → none |
| 16 | **Sewerage Networks** |  | 2027-03-22 → 2027-02-14 (-36d) |  |  |
| TAEXSWCC0200051 | Manhole Installation with backfilling Part 01 | 2027-03-14 → 2026-06-18 A (-269d) | 2027-03-18 → 2027-02-13 (-33d) | 0% → 95% | 77d → 133.37d |
| TAEXSWCC0200011 | Excavation works for Trench Part 01 | 2026-11-30 → 2026-08-19 A (-103d) | 2026-12-05 → 2026-08-20 A (-107d) | 0% → 100% | 2d → none |
| TAEXSWCC0200021 | Bedding Works Part 01 | 2026-12-06 → 2026-08-27 A (-101d) | 2026-12-07 → 2026-08-29 A (-100d) | 0% → 100% | 24d → none |
| TAEXSWCC0200031 | Install GRP Pipes & Fittings Part 01 | 2027-02-08 → 2026-09-05 A (-156d) | 2027-02-11 → 2026-09-10 A (-154d) | 0% → 100% | 77d → none |
| TAEXSWCC0200061 | Leakage Test Part 01 | 2027-03-20 → 2026-10-01 A (-170d) | 2027-03-22 → 2027-02-14 (-36d) | 0% → 90% | 77d → 133.37d |
| TAEXSWCC0200041 | Backfilling Works for Trench Part 01 | 2027-02-23 → 2027-01-19 (-35d) | 2027-03-01 → 2027-01-26 (-34d) |  | 77d → 133.37d |
| 17 | **Storm Networks** |  | 2027-03-25 → 2027-01-26 (-58d) |  |  |
| TAEXSTCC0200071 | Leakage Test Part 01 | 2027-03-23 → 2026-06-17 A (-279d) | 2027-03-25 → 2026-10-04 A (-172d) | 0% → 100% | 77d → none |
| TAEXSTCC0200051 | Manhole Installation with backfilling Part 01 | 2026-12-19 → 2026-06-18 A (-184d) | 2026-12-24 → 2026-11-28 (-26d) | 0% → 95% | 24d → 79.89d |
| TAEXSTCC020006 | Install Catch Basin with UPVC Pipes & Fittings | 2027-01-21 → 2026-08-08 A (-166d) | 2027-02-07 → 2027-01-26 (-12d) | 0% → 85% | 1d → 31.19d |
| TAEXSTCC0200041 | Backfilling Works for Trench Part 01 | 2026-12-08 → 2026-09-13 A (-86d) | 2026-12-13 → 2026-09-19 A (-85d) | 0% → 100% | 24d → none |
| 2 | **Collector Road 03** |  | 2027-05-31 → 2027-06-08 (+8d) |  |  |
| 10 | **Road Works** |  | 2027-05-24 → 2027-06-01 (+8d) |  |  |
| TAEXRDCC0300041 | ABC aggregate Base Course Works Part 01 | 2026-08-25 → 2026-06-08 A (-78d) | 2026-08-30 → 2026-06-11 A (-80d) | 0% → 100% | 0d → none |
| TAEXRDCC030005 | MBC1 layer | 2026-08-31 → 2026-06-10 A (-82d) | 2026-08-31 → 2026-06-13 A (-79d) | 0% → 100% | 0d → none |
| TAEXRDCC030006 | BBC Base Course | 2026-09-01 → 2026-06-14 A (-79d) | 2026-09-05 → 2026-06-15 A (-82d) | 0% → 100% | 0d → none |
| TAEXRDCC030008 | Precast Concret Kerps | 2027-05-02 → 2026-08-02 A (-273d) | 2027-05-09 → 2026-08-16 A (-266d) | 0% → 100% | 28d → none |
| TAEXRDCC030007 | BWC Asphalt Wearing Course with RC | 2027-05-10 → 2027-05-17 (+7d) | 2027-05-11 → 2027-05-19 (+8d) |  | 41d → 34.1d |
| TAEXRDCC030009 | Precast Interlock Works | 2027-05-12 → 2027-05-19 (+7d) | 2027-05-18 → 2027-05-26 (+8d) |  | 49d → 42.1d |
| TAEXRDCC030010 | Stone Paving works | 2027-05-19 → 2027-05-26 (+7d) | 2027-05-20 → 2027-05-29 (+9d) |  | 49d → 42.1d |

| ID | Task | Start | Finish | Complete | Total float |
| --- | --- | --- | --- | --- | --- |
| TAEXRDCC030011 | Road Marking | 2027-05-22 → 2027-05-29 (+7d) | 2027-05-22 → 2027-05-30 (+8d) |  | 49d → 42.1d |
| TAEXRDCC030012 | Traffic Sinage | 2027-05-23 → 2027-05-30 (+7d) | 2027-05-24 → 2027-06-01 (+8d) |  | 49d → 42.1d |
| 1 | **Electrical Works** |  | 2027-05-31 → 2027-06-08 (+8d) |  |  |
| TAEXELCC0300011 | Trench Cut off Part 01 | 2026-09-06 → 2026-11-16 (+71d) | 2026-09-16 → 2026-11-28 (+73d) |  | 0d → -24.67d |
| TAEXELCC030005 | Cables Pulling | 2027-05-10 → 2027-05-17 (+7d) | 2027-05-13 → 2027-05-22 (+9d) |  | 28d → 21.1d |
| TAEXELCC0300041 | Trench Backfilling Part 01 | 2027-05-15 → 2027-05-22 (+7d) | 2027-05-18 → 2027-05-26 (+8d) |  | 28d → 21.1d |
| TAEXELCC030006 | Poles RC Foundation | 2027-05-19 → 2027-05-26 (+7d) | 2027-05-22 → 2027-05-30 (+8d) |  | 28d → 21.1d |
| TAEXELCC030007 | Earthing cables | 2027-05-23 → 2027-05-30 (+7d) | 2027-05-24 → 2027-06-01 (+8d) |  | 28d → 21.1d |
| TAEXELCC030008 | Lighting Pole Installation with Luminares | 2027-05-23 → 2027-05-30 (+7d) | 2027-05-31 → 2027-06-08 (+8d) |  | 59d → 52.1d |
| 2 | **Telecommunication Works** | 2026-09-24 → 2026-11-23 (+60d) | 2027-04-04 → 2027-04-29 (+25d) |  |  |
| TAEXTCCC030001 | Trench Cut off | 2026-09-24 → 2026-11-23 (+60d) | 2026-10-05 → 2026-12-05 (+61d) |  | 45d → -5.61d |
| TAEXTCCC030002 | Drawpit and PVC Pipes Installation | 2027-03-11 → 2027-04-05 (+25d) | 2027-03-18 → 2027-04-13 (+26d) |  | 0d → -8.27d |
| TAEXTCCC030003 | Road Crossing Ducts | 2027-03-20 → 2027-04-13 (+24d) | 2027-03-21 → 2027-04-15 (+25d) |  | 108d → 86.05d |
| TAEXTCCC030004 | Trench Backfilling | 2027-03-22 → 2027-04-15 (+24d) | 2027-04-04 → 2027-04-29 (+25d) |  | 108d → 86.05d |
| 3 | **CCTV Works** | 2026-09-24 → 2026-10-13 (+19d) | 2027-03-31 → 2027-04-20 (+20d) |  |  |
| TAEXCCCC030001 | Pipe Installation with manhole | 2026-09-24 → 2026-10-13 (+19d) | 2026-10-01 → 2026-10-21 (+20d) |  | 0d → -3.55d |
| TAEXCCCC030002 | CCTV Swiches Lighting panels Installation | 2027-02-25 → 2027-03-16 (+19d) | 2027-03-10 → 2027-03-30 (+20d) |  | 0d → -3.55d |
| TAEXCCCC030003 | Cable laying and connected with Panels | 2027-03-11 → 2027-03-30 (+19d) | 2027-03-20 → 2027-04-08 (+19d) |  | 114d → 97.45d |
| TAEXCCCC030004 | Pole Installation with IP Outdoor CCTV POE Camera | 2027-03-21 → 2027-04-08 (+18d) | 2027-03-31 → 2027-04-20 (+20d) |  | 114d → 97.45d |
| 8 | **Upgrade local 21** |  | 2027-06-08 → 2027-06-16 (+8d) |  |  |
| 22 | **Road Works** | 2027-05-10 → 2027-05-17 (+7d) | 2027-06-08 → 2027-06-16 (+8d) |  |  |
| TAEXRDCU210002 | Precast Concret Kerps | 2027-05-10 → 2027-05-17 (+7d) | 2027-05-19 → 2027-05-27 (+8d) |  | 36d → 29.1d |
| TAEXRDCU210001 | BWC Asphalt Wearing Course with RC | 2027-05-20 → 2027-05-27 (+7d) | 2027-05-20 → 2027-05-29 (+9d) |  | 36d → 29.1d |
| TAEXRDCU210003 | Precast Interlock Works | 2027-05-22 → 2027-05-29 (+7d) | 2027-05-29 → 2027-06-06 (+8d) |  | 36d → 29.1d |
| TAEXRDCU210004 | Stone Paving works | 2027-05-30 → 2027-06-06 (+7d) | 2027-06-03 → 2027-06-12 (+9d) |  | 36d → 29.1d |
| TAEXRDCU210005 | Road Marking | 2027-06-05 → 2027-06-12 (+7d) | 2027-06-05 → 2027-06-13 (+8d) |  | 36d → 29.1d |
| TAEXRDCU210006 | Traffic Sinage | 2027-06-06 → 2027-06-13 (+7d) | 2027-06-08 → 2027-06-16 (+8d) |  | 36d → 29.1d |
| 13 | **Electrical Works** | 2026-09-17 → 2026-11-28 (+72d) | 2027-05-29 → 2027-06-13 (+15d) |  |  |
| TAEXELCU210001 | Trench Cut off | 2026-09-17 → 2026-11-28 (+72d) | 2026-10-01 → 2026-12-13 (+73d) |  | 0d → -24.67d |
| TAEXELCU210002 | Drawpit and PVC Pipes Installation | 2027-03-16 → 2027-04-14 (+29d) | 2027-03-29 → 2027-04-28 (+30d) |  | 46d → 20.05d |
| TAEXELCU210003 | Road Crossing Ducts | 2027-03-30 → 2027-04-28 (+29d) | 2027-04-05 → 2027-05-05 (+30d) |  | 46d → 20.05d |
| TAEXELCU210006 | Poles RC Foundation | 2027-03-30 → 2027-04-28 (+29d) | 2027-04-07 → 2027-05-08 (+31d) |  | 68d → 42.05d |
| TAEXELCU210004 | Trench Backfilling | 2027-04-06 → 2027-05-05 (+29d) | 2027-04-26 → 2027-05-26 (+30d) |  | 46d → 20.05d |
| TAEXELCU210008 | Lighting Pole Installation with Luminares | 2027-04-08 → 2027-05-08 (+30d) | 2027-04-19 → 2027-05-19 (+30d) |  | 95d → 69.05d |
| TAEXELCU210005 | Cables Pulling | 2027-04-27 → 2027-05-26 (+29d) | 2027-05-03 → 2027-06-02 (+30d) |  | 46d → 20.05d |
| TAEXELCU210007 | Earthing cables | 2027-05-25 → 2027-06-02 (+8d) | 2027-05-29 → 2027-06-07 (+9d) |  | 28d → 20.05d |
| TAEXELCU210009 | Install Substation & RMU | 2027-05-04 → 2027-06-02 (+29d) | 2027-05-13 → 2027-06-13 (+31d) |  | 75d → 49.05d |
| 1 | **Telecommunication Works** | 2026-10-29 → 2026-12-28 (+60d) | 2027-04-29 → 2027-05-25 (+26d) |  |  |
| TAEXTCCU210001 | Trench Cut off | 2026-10-29 → 2026-12-28 (+60d) | 2026-11-14 → 2027-01-13 (+60d) |  | 45d → -5.61d |
| TAEXTCCU210002 | Drawpit and PVC Pipes Installation | 2027-03-20 → 2027-04-13 (+24d) | 2027-04-01 → 2027-04-27 (+26d) |  | 0d → -8.27d |
| TAEXTCCU210003 | Road Crossing Ducts | 2027-04-03 → 2027-04-27 (+24d) | 2027-04-08 → 2027-05-04 (+26d) |  | 86d → 64.05d |
| TAEXTCCU210004 | Trench Backfilling | 2027-04-10 → 2027-05-04 (+24d) | 2027-04-29 → 2027-05-25 (+26d) |  | 86d → 64.05d |
| 10 | **CCTV Works** | 2026-10-03 → 2026-10-21 (+18d) | 2027-04-28 → 2027-05-18 (+20d) |  |  |
| TAEXCCCU210001 | Pipe Installation with manhole | 2026-10-03 → 2026-10-21 (+18d) | 2026-10-18 → 2026-11-07 (+20d) |  | 0d → -3.55d |
| TAEXCCCU210002 | CCTV Swiches Lighting panels Installation | 2027-03-11 → 2027-03-30 (+19d) | 2027-03-29 → 2027-04-18 (+20d) |  | 0d → -3.55d |
| TAEXCCCU210003 | Cable laying and connected with Panels | 2027-03-30 → 2027-04-18 (+19d) | 2027-04-12 → 2027-05-02 (+20d) |  | 90d → 73.45d |
| TAEXCCCU210004 | Pole Installation with IP Outdoor CCTV POE Camera | 2027-04-13 → 2027-05-02 (+19d) | 2027-04-28 → 2027-05-18 (+20d) |  | 90d → 73.45d |
| 2 | **Potable Networks** | 2026-12-06 → 2026-09-05 (-92d) | 2027-03-10 → 2027-04-04 (+25d) |  |  |
| TAEXPTCU210001 | Excavation works for Trench | 2026-12-06 → 2026-09-05 A (-92d) | 2026-12-28 → 2026-11-03 (-55d) | 0% → 69% | 1d → 68.36d |
| TAEXPTCU210005 | Install Valves with fittings | 2027-01-27 → 2026-09-27 A (-122d) | 2027-02-04 → 2027-03-03 (+27d) | 0% → 15% | 126d → 105.44d |
| TAEXPTCU210007 | Valve Chamber works | 2027-02-15 → 2026-09-27 A (-141d) | 2027-03-04 → 2027-03-29 (+25d) | 0% → 15% | 126d → 105.44d |
| TAEXPTCU210002 | Bedding Works | 2026-12-29 → 2027-01-07 (+9d) | 2026-12-30 → 2027-01-10 (+11d) |  | 126d → 119.44d |
| TAEXPTCU210003 | Install Pipes & Fittings | 2026-12-31 → 2027-01-25 (+25d) | 2027-01-17 → 2027-02-11 (+25d) |  | 126d → 106.44d |
| TAEXPTCU210004 | Backfilling Works for Trench | 2027-01-18 → 2027-02-13 (+26d) | 2027-02-04 → 2027-03-03 (+27d) |  | 126d → 105.44d |
| TAEXPTCU210006 | Install fire hydrent | 2027-02-06 → 2027-03-03 (+25d) | 2027-02-14 → 2027-03-13 (+27d) |  | 126d → 105.44d |
| TAEXPTCU210008 | Inspection Test | 2027-03-06 → 2027-03-29 (+23d) | 2027-03-10 → 2027-04-04 (+25d) |  | 126d → 105.44d |
| 3 | **TSE Networks** | 2026-10-27 → 2026-09-27 (-30d) | 2027-01-31 → 2027-03-07 (+35d) |  |  |
| TAEXTSCU210005 | Install Valves with fittings | 2026-12-29 → 2026-09-27 A (-93d) | 2027-01-06 → 2027-02-13 (+38d) | 0% → 15% | 143d → 115.84d |
| TAEXTSCU210006 | Valve Chamber works | 2027-01-07 → 2026-09-27 A (-102d) | 2027-01-25 → 2027-03-01 (+35d) | 0% → 15% | 143d → 115.84d |
| TAEXTSCU210001 | Excavation works for Trench | 2026-10-27 → 2026-12-02 (+36d) | 2026-11-29 → 2027-01-05 (+37d) |  | 54d → 62.54d |
| TAEXTSCU210002 | Bedding Works | 2026-11-30 → 2027-01-05 (+36d) | 2026-12-01 → 2027-01-07 (+37d) |  | 135d → 105.44d |
| TAEXTSCU210003 | Install Pipes & Fittings | 2026-12-02 → 2027-01-07 (+36d) | 2026-12-19 → 2027-01-25 (+37d) |  | 135d → 105.44d |
| TAEXTSCU210004 | Backfilling Works for Trench | 2026-12-20 → 2027-01-25 (+36d) | 2027-01-06 → 2027-02-13 (+38d) |  | 135d → 105.44d |
| TAEXTSCU210007 | Inspection Test | 2027-01-26 → 2027-03-01 (+34d) | 2027-01-31 → 2027-03-07 (+35d) |  | 154d → 124.44d |
| 4 | **Sewerage Networks** | 2027-02-21 → 2026-08-09 (-196d) | 2027-05-09 → 2026-12-16 (-144d) |  |  |
| TAEXSWCU210001 | Excavation works for Trench | 2027-02-21 → 2026-08-09 A (-196d) | 2027-03-20 → 2026-11-04 (-136d) | 0% → 67% | 2d → 131.03d |
| TAEXSWCU210002 | Bedding Works | 2027-03-21 → 2026-09-06 A (-196d) | 2027-03-23 → 2026-11-05 (-138d) | 0% → 52% | 75d → 198.54d |
| TAEXSWCU210003 | Install GRP Pipes & Fittings | 2027-03-24 → 2026-09-09 A (-196d) | 2027-04-05 → 2026-11-12 (-144d) | 0% → 50% | 75d → 198.54d |
| TAEXSWCU210005 | Manhole Installation with backfilling | 2027-04-18 → 2026-09-09 A (-221d) | 2027-05-04 → 2026-12-12 (-143d) | 0% → 20% | 75d → 198.54d |
| TAEXSWCU210004 | Backfilling Works for Trench | 2027-04-05 → 2026-11-11 (-145d) | 2027-04-22 → 2026-11-30 (-143d) |  | 75d → 198.54d |

| ID | Task | Start | Finish | Complete | Total float |
| --- | --- | --- | --- | --- | --- |
| TAEXSWCU210006 | Leakage Test | 2027-05-05 → 2026-12-12 (-144d) | 2027-05-09 → 2026-12-16 (-144d) |  | 75d → 198.54d |
| 5 | **Storm Networks** |  | 2027-03-30 → 2027-02-14 (-44d) |  |  |
| TAEXSTCU210007 | Leakage Test | 2027-03-27 → 2026-06-11 A (-289d) | 2027-03-30 → 2027-02-14 (-44d) | 0% → 90% | 77d → 136.51d |
| TAEXSTCU2100051 | Manhole Installation with backfilling Part 01 | 2026-10-20 → 2026-06-15 A (-127d) | 2026-10-25 → 2026-12-01 (+37d) | 0% → 50% | 52d → 25.85d |
| TAEXSTCU2100031 | Install GRP Pipes & Fittings Part 01 | 2026-09-21 → 2026-07-05 A (-78d) | 2026-09-23 → 2026-10-07 (+14d) | 0% → 50% | 54d → 47.39d |
| TAEXSTCU2100041 | Backfilling Works for Trench Part 01 | 2026-10-06 → 2026-07-05 A (-93d) | 2026-10-11 → 2026-10-25 (+14d) | 0% → 50% | 54d → 47.39d |
| TAEXSTCU2100021 | Bedding Works Part 01 | 2026-09-20 → 2026-10-05 (+15d) | 2026-09-20 → 2026-10-05 (+15d) |  | 54d → 47.39d |
| TAEXSTCU210006 | Install Catch Basin with UPVC Pipes & Fittings | 2026-12-26 → 2026-12-28 (+2d) | 2027-01-10 → 2027-01-13 (+3d) |  | 0d → 2.35d |
| 6 | **Upgrade local 26** | 2026-10-03 → 2026-07-12 (-83d) | 2027-09-03 → 2027-10-02 (+29d) |  |  |
| 14 | **Electrical Works** | 2026-10-03 → 2026-07-12 (-83d) | 2027-09-03 → 2027-10-02 (+29d) |  |  |
| TAEXELCU260001 | Trench Cut off | 2026-10-03 → 2026-07-12 A (-83d) | 2026-10-18 → 2026-12-22 (+65d) | 0% → 44% | 0d → -24.67d |
| TAEXELCU260005 | Cables Pulling | 2027-04-05 → 2026-08-01 A (-247d) | 2027-04-08 → 2027-04-15 (+7d) | 0% → 39% | 123d → 117.86d |
| TAEXELCU260003 | Road Crossing Ducts | 2027-03-16 → 2026-08-15 A (-213d) | 2027-03-20 → 2026-08-16 A (-216d) | 0% → 100% | 123d → none |
| TAEXELCU260002 | Drawpit and PVC Pipes Installation | 2027-03-02 → 2026-08-19 A (-195d) | 2027-03-15 → 2026-08-22 A (-205d) | 0% → 100% | 111d → none |
| TAEXELCU260004 | Trench Backfilling | 2027-03-21 → 2026-09-03 A (-199d) | 2027-04-04 → 2027-04-12 (+8d) | 0% → 25% | 123d → 117.86d |
| TAEXELCU260006 | Poles RC Foundation | 2027-03-16 → 2027-03-31 (+15d) | 2027-03-22 → 2027-04-07 (+16d) |  | 111d → 97.05d |
| TAEXELCU260008 | Lighting Pole Installation with Luminares | 2027-03-23 → 2027-04-07 (+15d) | 2027-03-31 → 2027-04-17 (+17d) |  | 111d → 97.05d |
| TAEXELCU260007 | Earthing cables | 2027-08-31 → 2027-09-27 (+27d) | 2027-09-03 → 2027-10-02 (+29d) |  | 0d → -24.62d |
| 10 | **CCTV Works** | 2026-10-19 → 2026-11-07 (+19d) | 2027-05-03 → 2027-05-23 (+20d) |  |  |
| TAEXCCCU260001 | Pipe Installation with manhole | 2026-10-19 → 2026-11-07 (+19d) | 2026-10-29 → 2026-11-18 (+20d) |  | 0d → -3.55d |
| TAEXCCCU260002 | CCTV Swiches Lighting panels Installation | 2027-03-30 → 2027-04-18 (+19d) | 2027-04-12 → 2027-05-02 (+20d) |  | 0d → -3.55d |
| TAEXCCCU260003 | Cable laying and connected with Panels | 2027-04-13 → 2027-05-02 (+19d) | 2027-04-21 → 2027-05-11 (+20d) |  | 86d → 69.45d |
| TAEXCCCU260004 | Pole Installation with IP Outdoor CCTV POE Camera | 2027-04-22 → 2027-05-11 (+19d) | 2027-05-03 → 2027-05-23 (+20d) |  | 86d → 69.45d |
| 3 | **Local Road 10** |  | 2027-06-10 → 2027-06-09 (-1d) |  |  |
| 12 | **Road Works** |  | 2027-05-23 → 2027-05-20 (-3d) |  |  |
| TAEXRDCL100003 | Subgrade Works | 2027-01-16 → 2026-11-30 (-47d) | 2027-01-19 → 2026-12-05 (-45d) |  | 1d → 45.55d |
| TAEXRDCL100004 | ABC aggregate Base Course Works | 2027-01-21 → 2027-01-24 (+3d) | 2027-01-25 → 2027-01-28 (+3d) |  | 0d → 2.35d |
| TAEXRDCL100005 | MBC1 layer | 2027-01-26 → 2027-01-28 (+2d) | 2027-01-26 → 2027-01-30 (+4d) |  | 0d → 2.35d |
| TAEXRDCL100006 | BBC Base Course | 2027-01-27 → 2027-01-30 (+3d) | 2027-01-28 → 2027-02-01 (+4d) |  | 0d → 2.35d |
| TAEXRDCL100008 | Precast Concret Kerps | 2027-01-30 → 2027-02-01 (+2d) | 2027-02-14 → 2027-02-17 (+3d) |  | 0d → 2.35d |
| TAEXRDCL100007 | BWC Asphalt Wearing Course with RC | 2027-05-03 → 2027-04-29 (-4d) | 2027-05-03 → 2027-05-01 (-2d) |  | 50d → 52.35d |
| TAEXRDCL100009 | Precast Interlock Works | 2027-05-04 → 2027-05-01 (-3d) | 2027-05-18 → 2027-05-16 (-2d) |  | 50d → 52.35d |
| TAEXRDCL100010 | Stone Paving works | 2027-05-19 → 2027-05-16 (-3d) | 2027-05-20 → 2027-05-18 (-2d) |  | 50d → 52.35d |
| TAEXRDCL100011 | Road Marking | 2027-05-22 → 2027-05-18 (-4d) | 2027-05-22 → 2027-05-19 (-3d) |  | 50d → 52.35d |
| TAEXRDCL100012 | Traffic Sinage | 2027-05-23 → 2027-05-19 (-4d) | 2027-05-23 → 2027-05-20 (-3d) |  | 50d → 52.35d |
| 25 | **Electrical Works** | 2026-10-19 → 2026-09-01 (-48d) | 2027-05-31 → 2027-06-09 (+9d) |  |  |
| TAEXELCL100009 | Install Substation & RMU | 2027-04-22 → 2026-09-01 A (-233d) | 2027-05-02 → 2026-09-02 A (-242d) | 0% → 100% | 85d → none |
| TAEXELCL100001 | Trench Cut off | 2026-10-19 → 2026-12-22 (+64d) | 2026-11-01 → 2027-01-05 (+65d) |  | 0d → -24.67d |
| TAEXELCL100002 | Drawpit and PVC Pipes Installation | 2027-03-02 → 2027-03-31 (+29d) | 2027-03-13 → 2027-04-12 (+30d) |  | 80d → 54.05d |
| TAEXELCL100003 | Road Crossing Ducts | 2027-03-14 → 2027-04-12 (+29d) | 2027-03-15 → 2027-04-14 (+30d) |  | 80d → 54.05d |
| TAEXELCL100006 | Poles RC Foundation | 2027-03-14 → 2027-04-12 (+29d) | 2027-03-16 → 2027-04-15 (+30d) |  | 91d → 65.05d |
| TAEXELCL100004 | Trench Backfilling | 2027-03-16 → 2027-04-14 (+29d) | 2027-03-27 → 2027-04-26 (+30d) |  | 80d → 54.05d |
| TAEXELCL100008 | Lighting Pole Installation with Luminares | 2027-03-17 → 2027-04-15 (+29d) | 2027-03-21 → 2027-04-20 (+30d) |  | 120d → 94.05d |
| TAEXELCL100005 | Cables Pulling | 2027-03-28 → 2027-04-26 (+29d) | 2027-03-29 → 2027-04-28 (+30d) |  | 80d → 54.05d |
| TAEXELCL100007 | Earthing cables | 2027-05-30 → 2027-06-07 (+8d) | 2027-05-31 → 2027-06-09 (+9d) |  | 28d → 20.05d |
| 14 | **Telecommunication Works** | 2026-11-22 → 2027-01-20 (+59d) | 2027-04-20 → 2027-05-16 (+26d) |  |  |
| TAEXTCCL100001 | Trench Cut off | 2026-11-22 → 2027-01-20 (+59d) | 2026-11-26 → 2027-01-26 (+61d) |  | 45d → -5.61d |
| TAEXTCCL100002 | Drawpit and PVC Pipes Installation | 2027-04-03 → 2027-04-27 (+24d) | 2027-04-06 → 2027-05-02 (+26d) |  | 0d → -8.27d |
| TAEXTCCL100003 | Road Crossing Ducts | 2027-04-07 → 2027-05-02 (+25d) | 2027-04-08 → 2027-05-04 (+26d) |  | 94d → 72.05d |
| TAEXTCCL100004 | Trench Backfilling | 2027-04-10 → 2027-05-04 (+24d) | 2027-04-20 → 2027-05-16 (+26d) |  | 94d → 72.05d |
| 10 | **CCTV Works** | 2026-10-31 → 2026-11-18 (+18d) | 2027-05-11 → 2027-05-31 (+20d) |  |  |
| TAEXCCCL100001 | Pipe Installation with manhole | 2026-10-31 → 2026-11-18 (+18d) | 2026-11-08 → 2026-11-28 (+20d) |  | 0d → -3.55d |
| TAEXCCCL100002 | CCTV Swiches Lighting panels Installation | 2027-04-13 → 2027-05-02 (+19d) | 2027-04-24 → 2027-05-13 (+19d) |  | 0d → -3.55d |
| TAEXCCCL100003 | Cable laying and connected with Panels | 2027-04-25 → 2027-05-13 (+18d) | 2027-05-01 → 2027-05-20 (+19d) |  | 79d → 62.45d |
| TAEXCCCL100004 | Pole Installation with IP Outdoor CCTV POE Camera | 2027-05-02 → 2027-05-20 (+18d) | 2027-05-11 → 2027-05-31 (+20d) |  | 79d → 62.45d |
| 1 | **Potable Networks** | 2026-10-26 → 2026-08-01 (-86d) | 2027-05-30 → 2027-03-03 (-88d) |  |  |
| TAEXPTCL100001 | Excavation works for Trench | 2026-10-26 → 2026-08-01 A (-86d) | 2026-11-03 → 2026-08-16 A (-79d) | 0% → 100% | 1d → none |
| TAEXPTCL100002 | Bedding Works | 2026-11-04 → 2026-08-19 A (-77d) | 2026-11-05 → 2026-08-20 A (-77d) | 0% → 100% | 98d → none |
| TAEXPTCL100003 | Install Pipes & Fittings | 2026-11-07 → 2026-08-19 A (-80d) | 2026-11-15 → 2026-09-20 A (-56d) | 0% → 100% | 98d → none |
| TAEXPTCL100007 | Valve Chamber works | 2027-05-10 → 2026-09-17 A (-235d) | 2027-05-25 → 2027-02-27 (-87d) | 0% → 55% | 35d → 111.53d |
| TAEXPTCL100005 | Install Valves with fittings | 2027-05-05 → 2026-09-17 A (-230d) | 2027-05-09 → 2027-02-11 (-87d) | 0% → 40% | 20d → 122.9d |
| TAEXPTCL100006 | Install fire hydrent | 2027-05-03 → 2026-10-04 A (-211d) | 2027-05-09 → 2027-02-18 (-80d) | 0% → 50% | 28d → 111.53d |
| TAEXPTCL100004 | Backfilling Works for Trench | 2026-11-16 → 2026-10-25 (-22d) | 2026-11-29 → 2026-11-08 (-21d) |  | 98d → 204.93d |
| TAEXPTCL100008 | Inspection Test | 2027-05-26 → 2027-02-27 (-88d) | 2027-05-30 → 2027-03-03 (-88d) |  | 50d → 128.78d |
| 2 | **TSE Networks** | 2026-08-30 → 2026-07-15 (-46d) | 2027-06-03 → 2027-03-08 (-87d) |  |  |
| TAEXTSCL100001 | Excavation works for Trench | 2026-08-30 → 2026-07-15 A (-46d) | 2026-09-30 → 2026-08-18 A (-43d) | 0% → 100% | 54d → none |
| TAEXTSCL100002 | Bedding Works | 2026-11-07 → 2026-08-10 A (-89d) | 2026-11-08 → 2026-08-18 A (-82d) | 0% → 100% | 108d → none |
| TAEXTSCL100003 | Install Pipes & Fittings | 2026-11-16 → 2026-08-11 A (-97d) | 2026-11-24 → 2026-08-29 A (-87d) | 0% → 100% | 102d → none |
| TAEXTSCL100006 | Valve Chamber works | 2027-02-24 → 2026-08-29 A (-179d) | 2027-03-11 → 2026-10-04 A (-158d) | 0% → 100% | 118d → none |
| TAEXTSCL100004 | Backfilling Works for Trench | 2026-11-30 → 2026-08-30 A (-92d) | 2026-12-13 → 2026-09-05 A (-99d) | 0% → 100% | 98d → none |

| ID | Task | Start | Finish | Complete | Total float | Other |
| --- | --- | --- | --- | --- | --- | --- |
| TAEXTSCL100005 | Install Valves with fittings | 2027-02-20 → 2026-09-06 A (-167d) | 2027-02-23 → 2026-10-04 A (-142d) | 0% → 100% | 118d → none |  |
| TAEXTSCL100007 | Inspection Test | 2027-05-31 → 2027-03-03 (-89d) | 2027-06-03 → 2027-03-08 (-87d) |  | 50d → 128.78d |  |
| 3 | **Sewerage Networks** |  | 2027-06-07 → 2026-09-19 (-261d) |  |  |  |
| TAEXSWCL100006 | Leakage Test | 2027-06-05 → 2026-06-15 A (-355d) | 2027-06-07 → 2026-09-19 A (-261d) | 0% → 100% | 50d → none |  |
| TAEXSWCL1000011 | Excavation works for Trench Part 01 | 2026-12-06 → 2026-09-08 A (-89d) | 2026-12-08 → 2026-09-10 A (-89d) | 0% → 100% | 2d → none |  |
| TAEXSWCL1000021 | Bedding Works Part 01 | 2027-01-21 → 2026-09-08 A (-135d) | 2027-01-23 → 2026-09-10 A (-135d) | 0% → 100% | 138d → none |  |
| TAEXSWCL1000031 | Install GRP Pipes & Fittings Part 01 | 2027-01-24 → 2026-09-08 A (-138d) | 2027-01-28 → 2026-09-10 A (-140d) | 0% → 100% | 138d → none |  |
| TAEXSWCL1000041 | Backfilling Works for Trench Part 01 | 2027-02-10 → 2026-09-08 A (-155d) | 2027-02-15 → 2026-09-10 A (-158d) | 0% → 100% | 138d → none |  |
| TAEXSWCL1000051 | Manhole Installation with backfilling Part 01 | 2027-02-16 → 2026-09-10 A (-159d) | 2027-02-21 → 2026-09-13 A (-161d) | 0% → 100% | 138d → none |  |
| 4 | **Storm Networks** | 2026-08-15 → 2026-08-03 (-12d) | 2027-06-10 → 2027-01-24 (-137d) |  |  |  |
| TAEXSTCL100001 | Excavation works for Trench | 2026-08-15 → 2026-08-03 A (-12d) | 2026-08-29 → 2026-08-05 A (-24d) | 0% → 100% | 43d → none |  |
| TAEXSTCL100002 | Bedding Works | 2026-08-30 → 2026-08-16 A (-14d) | 2026-09-02 → 2026-08-19 A (-14d) | 0% → 100% | 62d → none |  |
| TAEXSTCL100003 | Install GRP Pipes & Fittings | 2026-09-03 → 2026-08-16 A (-18d) | 2026-09-10 → 2026-08-19 A (-22d) | 0% → 100% | 62d → none |  |
| TAEXSTCL100005 | Manhole Installation with backfilling | 2026-10-20 → 2026-08-22 A (-59d) | 2026-11-02 → 2026-09-06 A (-57d) | 0% → 100% | 59d → none |  |
| TAEXSTCL100004 | Backfilling Works for Trench | 2026-09-13 → 2026-08-29 A (-15d) | 2026-09-28 → 2026-08-30 A (-29d) | 0% → 100% | 62d → none |  |
| TAEXSTCL100007 | Leakage Test | 2027-06-08 → 2026-09-03 A (-278d) | 2027-06-10 → 2026-09-06 A (-277d) | 0% → 100% | 52d → none |  |
| TAEXSTCL100006 | Install Catch Basin with UPVC Pipes & Fittings | 2027-01-11 → 2027-01-13 (+2d) | 2027-01-20 → 2027-01-24 (+4d) |  | 0d → 2.35d |  |
| NEWPROJ-16-1-9-4 | **AMANAH ROAD** |  | 2027-08-23 → 2027-08-16 (-7d) |  |  |  |
| TAEXRDCA010001 | Preperation Wprks for Existing layer |  |  |  |  | resources DUMP TRUCK [98 h]; DUMP TRUCK DRIVER [98 h]; EXCAVATOR OPERATOR [112 h]; EXCAVATOR [112 h]; GRADER [98 h]; GRADER OPERATOR [98 h]; LABOR [98 h]; ROLEER [40 h]; ROLLER OPERATOR [40 h]; WATER TANKER [40 h]; WATER TANKER DRIVER [40 h]; COST [100000] → ROLEER [40 h]; DUMP TRUCK [98 h]; WATER TANKER [40 h]; EXCAVATOR [112 h]; GRADER [98 h]; LABOR [98 h]; GRADER OPERATOR [98 h]; DUMP TRUCK DRIVER [98 h]; WATER TANKER DRIVER [40 h]; EXCAVATOR OPERATOR [112 h]; ROLLER OPERATOR [40 h]; COST [100000] |
| TAEXRDCA020002 | MBC1 LAYER |  |  |  |  | resources COST [2458]; MC DRIVER [40 h]; MC1 sprinker [40 h] → MC1 sprinker [40 h]; MC DRIVER [40 h]; COST [2458] |
| TAEXRDCA020003 | BBC BASE COURSE |  |  |  |  | resources COST [1639606]; DUMP TRUCK [70 h]; DUMP TRUCK DRIVER [70 h]; LABOR [250 h]; ROLEER [120 h]; ROLLER OPERATOR [120 h]; MILLING MACHINE [60 h]; MILLING MACHINE OPERATOR [60 h]; WHEEL ROLLER [120 h]; WHEEL ROLLER OPERATOR [120 h] → ROLEER [120 h]; DUMP TRUCK [70 h]; MILLING MACHINE [60 h]; WHEEL ROLLER [120 h]; LABOR [250 h]; DUMP TRUCK DRIVER [70 h]; MILLING MACHINE OPERATOR [60 h]; WHEEL ROLLER OPERATOR [120 h]; ROLLER OPERATOR [120 h]; COST [1639606] |
| TAEXRDCA030004 | Precast Concret Kerps |  |  |  |  | resources COST [308213]; LABOR [160 h] → LABOR [160 h]; COST [308213] |
| TAEXRDCA040005 | Road Marking |  |  |  |  | resources COST [266059]; LABOR [80 h] → LABOR [80 h]; COST [266059] |
| TAEXRDCA050006 | Traffic Sinage |  |  |  |  | resources COST [31357.7]; EXCAVATOR [15 h]; EXCAVATOR OPERATOR [15 h]; LABOR [55 h] → EXCAVATOR [15 h]; LABOR [55 h]; EXCAVATOR OPERATOR [15 h]; COST [31357.7] |
| TAEXRDCA050007 | Backfilling Works for Road | 2027-07-26 → 2027-07-18 (-8d) | 2027-08-23 → 2027-08-16 (-7d) |  | 10d → 16.08d | resources COST [166320]; DUMP TRUCK [98 h]; DUMP TRUCK DRIVER [98 h]; EXCAVATOR OPERATOR [112 h]; EXCAVATOR [112 h]; GRADER [98 h]; GRADER OPERATOR [98 h]; LABOR [98 h]; ROLEER [40 h]; ROLLER OPERATOR [40 h]; WATER TANKER [40 h]; WATER TANKER DRIVER [40 h] → ROLEER [40 h]; DUMP TRUCK [98 h]; WATER TANKER [40 h]; EXCAVATOR [112 h]; GRADER [98 h]; LABOR [98 h]; GRADER OPERATOR [98 h]; DUMP TRUCK DRIVER [98 h]; WATER TANKER DRIVER [40 h]; EXCAVATOR OPERATOR [112 h]; ROLLER OPERATOR [40 h]; COST [166320] |
| 10 | **ZONE 2** |  | 2027-08-11 → 2027-08-16 (+5d) |  |  |  |
| 1 | **Collector Road 01** |  | 2027-07-12 → 2027-07-05 (-7d) |  |  |  |
| 13 | **Road Works** |  | 2027-04-13 → 2027-04-17 (+4d) |  |  |  |
| TAEXRDCC0100011 | Road Excavation and Disposal Part 01 | 2026-12-17 → 2026-12-22 (+5d) | 2026-12-20 → 2026-12-26 (+6d) |  | 8d → 8.56d |  |
| TAEXRDCC0100021 | Backfilling Works for Road Part 01 | 2026-12-21 → 2026-12-26 (+5d) | 2026-12-23 → 2026-12-29 (+6d) |  | 8d → 8.56d |  |
| TAEXRDCC0100031 | Subgrade Works Part 01 | 2026-12-24 → 2026-12-29 (+5d) | 2027-01-07 → 2027-01-13 (+6d) |  | 8d → 8.56d |  |
| TAEXRDCC010004 | ABC aggregate Base Course Works | 2027-01-09 → 2027-01-13 (+4d) | 2027-01-28 → 2027-02-03 (+6d) |  | 8d → 8.56d |  |
| TAEXRDCC010005 | MBC1 layer | 2027-01-30 → 2027-02-03 (+4d) | 2027-01-31 → 2027-02-06 (+6d) |  | 8d → 8.56d |  |
| TAEXRDCC010006 | BBC Base Course | 2027-02-01 → 2027-02-06 (+5d) | 2027-02-04 → 2027-02-10 (+6d) |  | 8d → 8.56d |  |
| TAEXRDCC010008 | Precast Concret Kerps | 2027-02-15 → 2027-02-17 (+2d) | 2027-03-07 → 2027-03-10 (+3d) |  | 0d → 2.35d |  |
| TAEXRDCC010007 | BWC Asphalt Wearing Course with RC | 2027-03-08 → 2027-03-10 (+2d) | 2027-03-09 → 2027-03-13 (+4d) |  | 88d → 85.46d |  |
| TAEXRDCC010009 | Precast Interlock Works | 2027-03-10 → 2027-03-13 (+3d) | 2027-03-28 → 2027-03-31 (+3d) |  | 88d → 85.46d |  |
| TAEXRDCC010010 | Stone Paving works | 2027-03-29 → 2027-03-31 (+2d) | 2027-04-07 → 2027-04-11 (+4d) |  | 88d → 85.46d |  |
| TAEXRDCC010011 | Road Marking | 2027-04-08 → 2027-04-11 (+3d) | 2027-04-10 → 2027-04-13 (+3d) |  | 88d → 85.46d |  |
| TAEXRDCC010012 | Traffic Sinage | 2027-04-11 → 2027-04-13 (+2d) | 2027-04-13 → 2027-04-17 (+4d) |  | 88d → 85.46d |  |
| 11 | **Electrical Works** | 2026-11-02 → 2026-09-20 (-43d) | 2027-06-02 → 2027-06-12 (+10d) |  |  |  |
| TAEXELCC010003 | Road Crossing Ducts | 2027-03-14 → 2026-09-20 A (-175d) | 2027-03-15 → 2027-04-14 (+30d) | 0% → 13% | 83d → 57.31d |  |
| TAEXELCC010001 | Trench Cut off | 2026-11-02 → 2027-01-05 (+64d) | 2026-11-16 → 2027-01-20 (+65d) |  | 0d → -24.67d |  |
| TAEXELCC010002 | Drawpit and PVC Pipes Installation | 2027-03-02 → 2027-03-31 (+29d) | 2027-03-13 → 2027-04-12 (+30d) |  | 83d → 57.31d |  |
| TAEXELCC010006 | Poles RC Foundation | 2027-03-14 → 2027-04-12 (+29d) | 2027-03-16 → 2027-04-15 (+30d) |  | 93d → 67.05d |  |
| TAEXELCC010004 | Trench Backfilling | 2027-03-16 → 2027-04-14 (+29d) | 2027-04-01 → 2027-05-02 (+31d) |  | 83d → 57.31d |  |
| TAEXELCC010005 | Cables Pulling | 2027-04-03 → 2027-05-02 (+29d) | 2027-04-06 → 2027-05-06 (+30d) |  | 83d → 57.31d |  |
| TAEXELCC010008 | Lighting Pole Installation with Luminares | 2027-04-07 → 2027-05-06 (+29d) | 2027-04-18 → 2027-05-18 (+30d) |  | 83d → 57.31d |  |
| TAEXELCC010007 | Earthing cables | 2027-06-01 → 2027-06-09 (+8d) | 2027-06-02 → 2027-06-12 (+10d) |  | 28d → 20.05d |  |
| 1 | **Telecommunication Works** | 2026-11-28 → 2026-09-20 (-69d) | 2027-05-08 → 2027-06-02 (+25d) |  |  |  |
| TAEXTCCC010003 | Road Crossing Ducts | 2027-04-19 → 2026-09-20 A (-211d) | 2027-04-20 → 2027-05-16 (+26d) | 0% → 20% | 65d → 43.45d |  |
| TAEXTCCC010001 | Trench Cut off | 2026-11-28 → 2027-01-26 (+59d) | 2026-12-23 → 2027-02-22 (+61d) |  | 45d → -5.61d |  |
| TAEXTCCC010002 | Drawpit and HDPE Pipes Installation | 2027-04-07 → 2027-05-02 (+25d) | 2027-04-18 → 2027-05-13 (+25d) |  | 0d → -8.27d |  |
| TAEXTCCC010004 | Trench Backfilling | 2027-04-21 → 2027-05-16 (+25d) | 2027-05-08 → 2027-06-02 (+25d) |  | 65d → 43.45d |  |
| 2 | **CCTV Works** | 2026-11-09 → 2026-11-28 (+19d) | 2027-06-15 → 2027-07-05 (+20d) |  |  |  |
| TAEXCCCC010001 | Pipe Installation with manhole | 2026-11-09 → 2026-11-28 (+19d) | 2026-11-22 → 2026-12-12 (+20d) |  | 0d → -3.55d |  |
| TAEXCCCC010002 | CCTV Swiches Lighting panels Installation | 2027-04-25 → 2027-05-13 (+18d) | 2027-05-12 → 2027-06-01 (+20d) |  | 0d → -3.55d |  |
| TAEXCCCC010003 | Cable laying and connected with Panels | 2027-05-13 → 2027-06-01 (+19d) | 2027-05-26 → 2027-06-15 (+20d) |  | 49d → 32.45d |  |
| TAEXCCCC010004 | Pole Installation with IP Outdoor CCTV POE Camera | 2027-05-27 → 2027-06-15 (+19d) | 2027-06-15 → 2027-07-05 (+20d) |  | 49d → 32.45d |  |
| 3 | **Potable Networks** |  | 2027-07-07 → 2027-03-16 (-113d) |  |  |  |
| TAEXPTCC010002 | Bedding Works | 2026-10-07 → 2026-06-20 A (-109d) | 2026-10-08 → 2026-10-24 (+16d) | 0% → 27% | 8d → 8.56d |  |
| TAEXPTCC010003 | Install Pipes & Fittings | 2026-10-10 → 2026-06-21 A (-111d) | 2026-10-25 → 2026-11-04 (+10d) | 0% → 27% | 8d → 8.56d |  |
| TAEXPTCC010004 | Backfilling Works for Trench | 2026-10-26 → 2026-06-24 A (-124d) | 2026-11-12 → 2026-11-17 (+5d) | 0% → 27% | 8d → 10.88d |  |
| TAEXPTCC010007 | Valve Chamber works | 2027-06-10 → 2026-09-26 A (-257d) | 2027-07-03 → 2027-03-11 (-114d) | 0% → 15% | 20d → 117.13d |  |
| TAEXPTCC010005 | Install Valves with fittings | 2027-04-17 → 2026-09-26 A (-203d) | 2027-04-25 → 2027-02-01 (-83d) | 0% → 15% | 20d → 122.9d |  |
| TAEXPTCC0100011 | Excavation works for Trench Part 01 | 2026-09-26 → 2026-10-10 (+14d) | 2026-10-06 → 2026-10-21 (+15d) |  | 1d → 8.56d |  |
| TAEXPTCC010006 | Install fire hydrent | 2027-04-11 → 2027-01-25 (-76d) | 2027-04-18 → 2027-02-02 (-75d) |  | 19d → 89.58d |  |
| TAEXPTCC010008 | Inspection Test | 2027-07-04 → 2027-03-11 (-115d) | 2027-07-07 → 2027-03-16 (-113d) |  | 20d → 117.13d |  |
| 4 | **TSE Networks** | 2026-07-09 → 2026-09-06 (+59d) | 2027-07-12 → 2027-03-21 (-113d) |  |  |  |
| TAEXTSCC010001 | Excavation works for Trench | 2026-07-09 → 2026-09-06 A (+59d) | 2026-08-10 → 2026-10-31 (+82d) | 0% → 90% | 54d → 10.44d |  |

| ID | Task | Start | Finish | Complete | Total float |
| --- | --- | --- | --- | --- | --- |
| TAEXTSCC010005 | Install Valves with fittings | 2026-11-23 → 2026-09-26 A (-58d) | 2026-12-01 → 2026-12-09 (+8d) | 0% → 15% | 8d → 8.56d |
| TAEXTSCC010006 | Valve Chamber works | 2026-12-02 → 2026-09-26 A (-67d) | 2026-12-16 → 2026-12-22 (+6d) | 0% → 15% | 8d → 8.56d |
| TAEXTSCC010002 | Bedding Works | 2026-10-10 → 2026-10-31 (+21d) | 2026-10-11 → 2026-11-02 (+22d) |  | 22d → 10.44d |
| TAEXTSCC010003 | Install Pipes & Fittings | 2026-10-26 → 2026-11-04 (+9d) | 2026-11-10 → 2026-11-21 (+11d) |  | 10d → 8.56d |
| TAEXTSCC010004 | Backfilling Works for Trench | 2026-11-14 → 2026-11-21 (+7d) | 2026-12-01 → 2026-12-09 (+8d) |  | 8d → 8.56d |
| TAEXTSCC010007 | Inspection Test | 2027-07-08 → 2027-03-16 (-114d) | 2027-07-12 → 2027-03-21 (-113d) |  | 20d → 117.13d |
| 5 | **Sewerage Networks** |  | 2027-02-04 → 2026-12-06 (-60d) |  |  |
| TAEXSWCC0100011 | Excavation works for Trench Part 01 | 2026-12-09 → 2026-09-06 A (-94d) | 2026-12-14 → 2026-10-13 (-62d) | 0% → 90% | 2d → 131.03d |
| TAEXSWCC010005 | Manhole Installation with backfilling | 2027-01-14 → 2026-09-26 A (-110d) | 2027-01-30 → 2026-12-01 (-60d) | 0% → 45% | 144d → 196.4d |
| TAEXSWCC0100021 | Bedding Works Part 01 | 2026-12-15 → 2026-09-26 A (-80d) | 2026-12-16 → 2026-10-14 (-63d) | 0% → 80% | 144d → 203.15d |
| TAEXSWCC0100031 | Install GRP Pipes & Fittings Part 01 | 2026-12-17 → 2026-10-01 A (-77d) | 2026-12-22 → 2026-10-15 (-68d) | 0% → 70% | 144d → 203.15d |
| TAEXSWCC010006 | Leakage Test | 2027-01-31 → 2026-10-01 A (-122d) | 2027-02-04 → 2026-12-06 (-60d) | 0% → 15% | 144d → 196.4d |
| TAEXSWCC0100041 | Backfilling Works for Trench Part 01 | 2027-01-10 → 2026-11-02 (-69d) | 2027-01-18 → 2026-11-11 (-68d) |  | 144d → 203.15d |
| 6 | **Storm Networks** |  | 2027-02-08 → 2027-01-02 (-37d) |  |  |
| TAEXSTCC0100051 | Manhole Installation with backfilling Part 01 | 2026-10-20 → 2026-06-16 A (-126d) | 2026-10-31 → 2026-12-03 (+33d) | 0% → 50% | 45d → 21.35d |
| TAEXSTCC0100011 | Excavation works for Trench & Box Culvert Part 01 | 2026-06-03 → 2026-08-10 A (+68d) | 2026-06-08 → 2026-08-16 A (+69d) | 0% → 100% | 49d → none |
| TAEXSTCC0100021 | Bedding Works Part 01 | 2026-06-09 → 2026-08-20 A (+72d) | 2026-06-09 → 2026-08-22 A (+74d) | 0% → 100% | 142d → none |
| TAEXSTCC0100031 | Install GRP Pipes & Fittings Part 01 | 2026-06-10 → 2026-08-29 A (+80d) | 2026-06-13 → 2026-08-30 A (+78d) | 0% → 100% | 142d → none |
| TAEXSTCC0100041 | Backfilling Works for Trench & Box Culvert Part 01 | 2026-07-01 → 2026-10-05 (+96d) | 2026-07-09 → 2026-10-13 (+96d) |  | 142d → 64.89d |
| TAEXSTCC0100091 | Install Box Culvert Part 2 Part 01 | 2026-11-01 → 2026-12-03 (+32d) | 2026-11-11 → 2026-12-15 (+34d) |  | 45d → 21.35d |
| TAEXSTCC010006 | Install Catch Basin with UPVC Pipes & Fittings | 2026-11-12 → 2026-12-15 (+33d) | 2026-11-25 → 2026-12-29 (+34d) |  | 45d → 21.35d |
| TAEXSTCC010007 | Leakage Test | 2027-02-06 → 2026-12-29 (-39d) | 2027-02-08 → 2027-01-02 (-37d) |  | 152d → 184.46d |
| 11 | **Upgrade Local 28** |  | 2027-06-24 → 2027-07-13 (+19d) |  |  |
| 24 | **Road Works** | 2027-03-08 → 2027-03-10 (+2d) | 2027-05-05 → 2027-05-09 (+4d) |  |  |
| TAEXRDCU280002 | Precast Concret Kerps | 2027-03-08 → 2027-03-10 (+2d) | 2027-03-24 → 2027-03-28 (+4d) |  | 0d → 2.35d |
| TAEXRDCU280001 | BWC Asphalt Wearing Course with RC | 2027-04-12 → 2027-04-14 (+2d) | 2027-04-12 → 2027-04-15 (+3d) |  | 69d → 66.46d |
| TAEXRDCU280003 | Precast Interlock Works | 2027-04-13 → 2027-04-15 (+2d) | 2027-04-27 → 2027-05-01 (+4d) |  | 69d → 66.46d |
| TAEXRDCU280004 | Stone Paving works | 2027-04-28 → 2027-05-01 (+3d) | 2027-05-02 → 2027-05-05 (+3d) |  | 69d → 66.46d |
| TAEXRDCU280005 | Road Marking | 2027-05-03 → 2027-05-05 (+2d) | 2027-05-03 → 2027-05-06 (+3d) |  | 69d → 66.46d |
| TAEXRDCU280006 | Traffic Sinage | 2027-05-04 → 2027-05-06 (+2d) | 2027-05-05 → 2027-05-09 (+4d) |  | 69d → 66.46d |
| 15 | **Electrical Works** | 2026-11-17 → 2027-01-20 (+64d) | 2027-06-07 → 2027-06-16 (+9d) |  |  |
| TAEXELCU280001 | Trench Cut off | 2026-11-17 → 2027-01-20 (+64d) | 2026-11-28 → 2027-02-01 (+65d) |  | 0d → -24.67d |
| TAEXELCU280002 | Drawpit and PVC Pipes Installation | 2027-03-02 → 2027-03-31 (+29d) | 2027-03-14 → 2027-04-13 (+30d) |  | 69d → 43.05d |
| TAEXELCU280003 | Road Crossing Ducts | 2027-03-15 → 2027-04-13 (+29d) | 2027-03-18 → 2027-04-18 (+31d) |  | 72d → 46.05d |
| TAEXELCU280004 | Trench Backfilling | 2027-03-20 → 2027-04-18 (+29d) | 2027-04-07 → 2027-05-08 (+31d) |  | 72d → 46.05d |
| TAEXELCU280005 | Cables Pulling | 2027-04-08 → 2027-05-08 (+30d) | 2027-04-12 → 2027-05-12 (+30d) |  | 72d → 46.05d |
| TAEXELCU280006 | Poles RC Foundation | 2027-04-10 → 2027-05-09 (+29d) | 2027-04-15 → 2027-05-16 (+31d) |  | 69d → 43.05d |
| TAEXELCU280008 | Lighting Pole Installation with Luminares | 2027-04-17 → 2027-05-16 (+29d) | 2027-04-25 → 2027-05-25 (+30d) |  | 77d → 51.05d |
| TAEXELCU280007 | Earthing cables | 2027-06-03 → 2027-06-12 (+9d) | 2027-06-07 → 2027-06-16 (+9d) |  | 28d → 20.05d |
| 1 | **Telecommunication Works** | 2026-12-24 → 2027-02-22 (+60d) | 2027-05-17 → 2027-06-12 (+26d) |  |  |
| TAEXTCCU280001 | Trench Cut off | 2026-12-24 → 2027-02-22 (+60d) | 2027-01-04 → 2027-03-06 (+61d) |  | 45d → -5.61d |
| TAEXTCCU280002 | Drawpit and PVC Pipes Installation | 2027-04-19 → 2027-05-13 (+24d) | 2027-04-27 → 2027-05-23 (+26d) |  | 0d → -8.27d |
| TAEXTCCU280003 | Road Crossing Ducts | 2027-04-28 → 2027-05-23 (+25d) | 2027-05-02 → 2027-05-27 (+25d) |  | 57d → 35.05d |
| TAEXTCCU280004 | Trench Backfilling | 2027-05-03 → 2027-05-27 (+24d) | 2027-05-17 → 2027-06-12 (+26d) |  | 57d → 35.05d |
| 2 | **CCTV Works** | 2026-11-23 → 2026-12-12 (+19d) | 2027-06-23 → 2027-07-13 (+20d) |  |  |
| TAEXCCCU280001 | Pipe Installation with manhole | 2026-11-23 → 2026-12-12 (+19d) | 2026-12-06 → 2026-12-26 (+20d) |  | 0d → -3.55d |
| TAEXCCCU280002 | CCTV Swiches Lighting panels Installation | 2027-05-13 → 2027-06-01 (+19d) | 2027-05-29 → 2027-06-17 (+19d) |  | 0d → -3.55d |
| TAEXCCCU280003 | Cable laying and connected with Panels | 2027-05-30 → 2027-06-17 (+18d) | 2027-06-09 → 2027-06-29 (+20d) |  | 42d → 25.45d |
| TAEXCCCU280004 | Pole Installation with IP Outdoor CCTV POE Camera | 2027-06-10 → 2027-06-29 (+19d) | 2027-06-23 → 2027-07-13 (+20d) |  | 42d → 25.45d |
| 3 | **Potable Networks** | 2026-11-04 → 2026-08-23 (-73d) | 2027-06-16 → 2027-03-21 (-87d) |  |  |
| TAEXPTCU280001 | Excavation works for Trench | 2026-11-04 → 2026-08-23 A (-73d) | 2026-12-05 → 2026-10-27 (-39d) | 0% → 94% | 1d → 68.36d |
| TAEXPTCU280002 | Bedding Works | 2026-12-06 → 2026-09-06 A (-91d) | 2026-12-07 → 2026-10-27 (-41d) | 0% → 94% | 152d → 195.81d |
| TAEXPTCU280003 | Install Pipes & Fittings | 2026-12-08 → 2026-09-06 A (-93d) | 2026-12-16 → 2026-10-27 (-50d) | 0% → 94% | 152d → 195.81d |
| TAEXPTCU280004 | Backfilling Works for Trench | 2026-12-17 → 2026-10-27 (-51d) | 2027-01-02 → 2026-11-12 (-51d) |  | 152d → 195.81d |
| TAEXPTCU280005 | Install Valves with fittings | 2026-12-29 → 2026-11-08 (-51d) | 2027-01-02 → 2026-11-12 (-51d) |  | 152d → 195.81d |
| TAEXPTCU280006 | Install fire hydrent | 2027-01-03 → 2026-11-12 (-52d) | 2027-01-09 → 2026-11-19 (-51d) |  | 152d → 195.81d |
| TAEXPTCU280007 | Valve Chamber works | 2027-05-26 → 2027-02-27 (-88d) | 2027-06-12 → 2027-03-16 (-88d) |  | 35d → 111.53d |
| TAEXPTCU280008 | Inspection Test | 2027-06-13 → 2027-03-16 (-89d) | 2027-06-16 → 2027-03-21 (-87d) |  | 35d → 111.53d |
| 4 | **TSE Networks** | 2026-10-01 → 2026-11-07 (+37d) | 2027-06-21 → 2027-03-25 (-88d) |  |  |
| TAEXTSCU280001 | Excavation works for Trench | 2026-10-01 → 2026-11-07 (+37d) | 2026-10-26 → 2026-12-02 (+37d) |  | 54d → 62.54d |
| TAEXTSCU280002 | Bedding Works | 2026-12-08 → 2026-12-02 (-6d) | 2026-12-09 → 2026-12-05 (-4d) |  | 160d → 164.79d |
| TAEXTSCU280003 | Install Pipes & Fittings | 2026-12-10 → 2026-12-05 (-5d) | 2026-12-19 → 2026-12-14 (-5d) |  | 160d → 164.79d |
| TAEXTSCU280004 | Backfilling Works for Trench | 2026-12-20 → 2026-12-14 (-6d) | 2027-01-04 → 2026-12-30 (-5d) |  | 160d → 164.79d |
| TAEXTSCU280005 | Install Valves with fittings | 2026-12-31 → 2026-12-26 (-5d) | 2027-01-04 → 2026-12-30 (-5d) |  | 160d → 164.79d |
| TAEXTSCU280006 | Valve Chamber works | 2027-01-05 → 2026-12-30 (-6d) | 2027-01-21 → 2027-01-17 (-4d) |  | 160d → 164.79d |
| TAEXTSCU280007 | Inspection Test | 2027-06-17 → 2027-03-21 (-88d) | 2027-06-21 → 2027-03-25 (-88d) |  | 35d → 111.53d |
| 19 | **Storm Networks** |  | 2027-06-24 → 2027-03-28 (-88d) |  |  |
| TAEXSTCU280007 | Leakage Test | 2027-06-22 → 2026-08-01 A (-325d) | 2027-06-24 → 2027-03-28 (-88d) | 0% → 25% | 35d → 111.53d |
| TAEXSTCU21000611 | Excavation works for Trench Part 01 | 2026-08-09 → 2026-09-05 A (+27d) | 2026-08-13 → 2026-09-06 A (+24d) | 0% → 100% | 43d → none |
| TAEXSTCU21000711 | Bedding Works Part 01 | 2026-08-15 → 2026-09-10 A (+26d) | 2026-08-15 → 2026-09-13 A (+29d) | 0% → 100% | 57d → none |

| ID | Task | Start | Finish | Complete | Total float |
| --- | --- | --- | --- | --- | --- |
| TAEXSTCU21000811 | Install GRP Pipes & Fittings Part 01 | 2026-08-16 → 2026-09-10 A (+25d) | 2026-08-20 → 2026-09-13 A (+24d) | 0% → 100% | 57d → none |
| TAEXSTCU21000911 | Backfilling Works for Trench Part 01 | 2026-08-31 → 2026-10-05 (+35d) | 2026-09-07 → 2026-10-12 (+35d) |  | 57d → 31.89d |
| TAEXSTCU21001011 | Manhole Installation with backfilling Part 01 | 2026-10-20 → 2026-11-28 (+39d) | 2026-10-25 → 2026-12-03 (+39d) |  | 31d → 2.35d |
| TAEXSTCU280006 | Install Catch Basin with UPVC Pipes & Fittings | 2026-10-26 → 2026-12-03 (+38d) | 2026-11-08 → 2026-12-17 (+39d) |  | 31d → 2.35d |
| 5 | **Local Road 02** |  | 2027-07-25 → 2027-08-01 (+7d) |  |  |
| 2 | **Road Works** |  | 2027-07-25 → 2027-07-18 (-7d) |  |  |
| TAEXRDC L020004 | ABC aggregate Base Course Works | 2026-11-30 → 2026-06-21 A (-162d) | 2026-12-08 → 2026-08-09 A (-121d) | 0% → 100% | 12d → none |
| TAEXRDC L020005 | MBC1 layer | 2026-12-09 → 2026-07-05 A (-157d) | 2026-12-09 → 2026-08-09 A (-122d) | 0% → 100% | 87d → none |
| TAEXRDC L020006 | BBC Base Course | 2026-12-10 → 2026-07-08 A (-155d) | 2026-12-13 → 2026-08-16 A (-119d) | 0% → 100% | 87d → none |
| TAEXRDC L020008 | Precast Concret Kerps | 2027-03-25 → 2026-09-26 A (-180d) |  | 0% → 31% | 0d → 2.35d |
| TAEXRDC L020007 | BWC Asphalt Wearing Course with RC | 2027-05-12 → 2027-05-19 (+7d) | 2027-05-12 → 2027-05-20 (+8d) |  | 41d → 34.1d |
| TAEXRDC L020009 | Precast Interlock Works | 2027-05-13 → 2027-05-20 (+7d) | 2027-05-23 → 2027-05-31 (+8d) |  | 45d → 38.1d |
| TAEXRDC L020010 | Stone Paving works | 2027-05-24 → 2027-05-31 (+7d) | 2027-05-27 → 2027-06-05 (+9d) |  | 45d → 38.1d |
| TAEXRDC L020011 | Road Marking | 2027-07-20 → 2027-07-12 (-8d) | 2027-07-22 → 2027-07-15 (-7d) |  | 0d → 6.08d |
| TAEXRDC L020012 | Traffic Sinage | 2027-07-24 → 2027-07-15 (-9d) | 2027-07-25 → 2027-07-18 (-7d) |  | 0d → 6.08d |
| 1 | **Electrical Works** | 2026-11-29 → 2026-06-11 (-171d) | 2027-06-09 → 2027-06-19 (+10d) |  |  |
| TAEXELCL020001 | Trench Cut off | 2026-11-29 → 2026-06-11 A (-171d) | 2026-12-08 → 2027-02-09 (+63d) | 0% → 22% | 0d → -24.67d |
| TAEXELCL020002 | Drawpit and PVC Pipes Installation | 2027-03-02 → 2026-06-13 A (-262d) | 2027-03-10 → 2026-06-21 A (-262d) | 0% → 100% | 90d → none |
| TAEXELCL020003 | Road Crossing Ducts | 2027-03-11 → 2026-06-13 A (-271d) | 2027-03-13 → 2026-06-21 A (-265d) | 0% → 100% | 90d → none |
| TAEXELCL020004 | Trench Backfilling | 2027-03-14 → 2026-06-16 A (-271d) | 2027-03-23 → 2027-04-11 (+19d) | 0% → 5% | 90d → 75.88d |
| TAEXELCL020005 | Cables Pulling | 2027-03-24 → 2026-09-20 A (-185d) | 2027-03-27 → 2027-04-13 (+17d) | 0% → 46% | 90d → 75.88d |
| TAEXELCL020006 | Poles RC Foundation | 2027-03-11 → 2027-03-31 (+20d) | 2027-03-14 → 2027-04-04 (+21d) |  | 101d → 83.05d |
| TAEXELCL020008 | Lighting Pole Installation with Luminares | 2027-03-15 → 2027-04-04 (+20d) | 2027-03-18 → 2027-04-08 (+21d) |  | 109d → 91.05d |
| TAEXELCL020007 | Earthing cables | 2027-06-08 → 2027-06-16 (+8d) | 2027-06-09 → 2027-06-19 (+10d) |  | 28d → 20.05d |
| 5 | **Telecommunication Works** | 2027-01-05 → 2026-06-11 (-208d) | 2027-05-13 → 2027-06-02 (+20d) |  |  |
| TAEXTCCL020001 | Trench Cut off | 2027-01-05 → 2026-06-11 A (-208d) | 2027-01-11 → 2027-03-13 (+61d) | 0% → 12% | 45d → -5.61d |
| TAEXTCCL020002 | Drawpit and PVC Pipes Installation | 2027-04-28 → 2026-06-13 A (-319d) | 2027-05-01 → 2026-06-23 A (-312d) | 0% → 100% | 0d → none |
| TAEXTCCL020003 | Road Crossing Ducts | 2027-05-02 → 2026-06-13 A (-323d) | 2027-05-03 → 2026-06-23 A (-314d) | 0% → 100% | 60d → none |
| TAEXTCCL020004 | Trench Backfilling | 2027-05-04 → 2027-05-23 (+19d) | 2027-05-13 → 2027-06-02 (+20d) |  | 60d → 43.05d |
| 3 | **CCTV Works** | 2026-12-07 → 2026-12-26 (+19d) | 2027-07-12 → 2027-08-01 (+20d) |  |  |
| TAEXCCCL020001 | Pipe Installation with manhole | 2026-12-07 → 2026-12-26 (+19d) | 2026-12-17 → 2027-01-06 (+20d) |  | 0d → -3.55d |
| TAEXCCCL020002 | CCTV Swiches Lighting panels Installation | 2027-05-30 → 2027-06-17 (+18d) | 2027-06-13 → 2027-07-03 (+20d) |  | 0d → -3.55d |
| TAEXCCCL020003 | Cable laying and connected with Panels | 2027-06-14 → 2027-07-03 (+19d) | 2027-06-24 → 2027-07-14 (+20d) |  | 26d → 9.45d |
| TAEXCCCL020004 | Pole Installation with IP Outdoor CCTV POE Camera | 2027-06-26 → 2027-07-14 (+18d) | 2027-07-12 → 2027-08-01 (+20d) |  | 26d → 9.45d |
| 4 | **Potable Networks** |  | 2027-04-04 → 2026-06-25 (-283d) |  |  |
| TAEXPTCL0200051 | Install Valves with fittings Part 01 | 2026-10-08 → 2026-06-06 A (-124d) | 2026-10-08 → 2026-06-09 A (-121d) | 0% → 100% | 38d → none |
| TAEXPTCL0200061 | Install fire hydrent Part 01 | 2026-11-22 → 2026-06-06 A (-169d) | 2026-11-24 → 2026-06-09 A (-168d) | 0% → 100% | 1d → none |
| TAEXPTCL0200071 | Valve Chamber works Part 01 | 2026-11-25 → 2026-06-06 A (-172d) | 2026-11-29 → 2026-06-20 A (-162d) | 0% → 100% | 5d → none |
| TAEXPTCL020008 | Inspection Test | 2027-03-31 → 2026-06-25 A (-279d) | 2027-04-04 → 2026-06-25 A (-283d) | 0% → 100% | 77d → none |
| 6 | **TSE Networks** |  | 2027-04-08 → 2026-06-28 (-284d) |  |  |
| TAEXTSCL0200061 | Valve Chamber works Part 01 | 2027-03-17 → 2026-06-04 A (-286d) | 2027-03-25 → 2026-06-20 A (-278d) | 0% → 100% | 106d → none |
| TAEXTSCL0200051 | Install Valves with fittings Part 01 | 2027-03-15 → 2026-06-06 A (-282d) | 2027-03-16 → 2026-06-09 A (-280d) | 0% → 100% | 77d → none |
| TAEXTSCL020007 | Inspection Test | 2027-04-05 → 2026-06-25 A (-284d) | 2027-04-08 → 2026-06-28 A (-284d) | 0% → 100% | 98d → none |
| 20 | **Storm Networks** |  | 2027-04-12 → 2027-02-14 (-57d) |  |  |
| TAEXSTCL0200061 | Install Catch Basin with UPVC Pipes & Fittings Part 01 | 2026-08-24 → 2026-06-06 A (-79d) | 2026-08-27 → 2026-06-11 A (-77d) | 0% → 100% | 53d → none |
| TAEXSTCL020007 | Leakage Test | 2027-04-10 → 2026-06-23 A (-291d) | 2027-04-12 → 2027-02-14 (-57d) | 0% → 95% | 98d → 147.36d |
| 7 | **Local Road 03** |  | 2027-07-26 → 2027-08-15 (+20d) |  |  |
| TAEXRDCL0300021 | Backfilling Works for Road Part 01 | 2026-12-23 → 2026-08-02 A (-143d) | 2027-01-02 → 2026-11-30 (-33d) | 0% → 80% | 1d → 45.55d |
| TAEXRDCL030003 | Subgrade Works | 2027-01-03 → 2026-08-02 A (-154d) | 2027-01-11 → 2026-08-08 A (-156d) | 0% → 100% | 1d → none |
| TAEXRDCL030004 | ABC aggregate Base Course Works | 2027-01-12 → 2026-08-08 A (-157d) | 2027-01-28 → 2026-08-23 A (-158d) | 0% → 100% | 52d → none |
| TAEXRDCL030005 | MBC1 layer | 2027-01-30 → 2026-08-26 A (-157d) | 2027-01-31 → 2026-08-27 A (-157d) | 0% → 100% | 52d → none |
| TAEXRDCL030006 | BBC Base Course | 2027-02-01 → 2026-08-28 A (-157d) | 2027-02-02 → 2026-08-29 A (-157d) | 0% → 100% | 52d → none |
| TAEXRDCL030008 | Precast Concret Kerps | 2027-04-05 → 2027-04-04 (-1d) |  |  | 0d → 2.35d |
| TAEXRDCL030007 | BWC Asphalt Wearing Course with RC | 2027-04-15 → 2027-04-14 (-1d) |  |  | 72d → 72.25d |
| TAEXRDCL030009 | Precast Interlock Works | 2027-04-17 → 2027-04-15 (-2d) |  |  | 72d → 72.25d |
| TAEXRDCL030010 | Stone Paving works | 2027-04-26 → 2027-04-25 (-1d) |  |  | 72d → 72.25d |
| TAEXRDCL030011 | Road Marking | 2027-04-29 → 2027-04-28 (-1d) |  |  | 72d → 72.25d |
| TAEXRDCL030012 | Traffic Sinage | 2027-05-01 → 2027-04-29 (-2d) |  |  | 72d → 72.25d |
| 1 | **Electrical Works** | 2026-12-09 → 2026-08-08 (-123d) | 2027-06-12 → 2027-06-21 (+9d) |  |  |
| TAEXELCL030002 | Drawpit and PVC Pipes Installation | 2027-03-02 → 2026-08-08 A (-206d) | 2027-03-10 → 2027-04-03 (+24d) | 0% → 75% | 91d → 73.3d |
| TAEXELCL030003 | Road Crossing Ducts | 2027-03-11 → 2026-08-08 A (-215d) | 2027-03-13 → 2027-04-04 (+22d) | 0% → 75% | 91d → 73.3d |
| TAEXELCL030001 | Trench Cut off | 2026-12-09 → 2026-09-06 A (-94d) | 2026-12-21 → 2027-02-15 (+56d) | 0% → 51% | 0d → -24.67d |
| TAEXELCL030005 | Cables Pulling | 2027-03-25 → 2026-09-20 A (-186d) | 2027-03-28 → 2027-04-18 (+21d) | 0% → 25% | 91d → 73.3d |
| TAEXELCL030006 | Poles RC Foundation | 2027-03-11 → 2027-04-03 (+23d) | 2027-03-14 → 2027-04-06 (+23d) |  | 103d → 83.05d |
| TAEXELCL030004 | Trench Backfilling | 2027-03-14 → 2027-04-04 (+21d) | 2027-03-24 → 2027-04-15 (+22d) |  | 91d → 73.3d |
| TAEXELCL030008 | Lighting Pole Installation with Luminares | 2027-03-15 → 2027-04-06 (+22d) | 2027-03-20 → 2027-04-12 (+23d) |  | 108d → 88.05d |
| TAEXELCL030007 | Earthing cables | 2027-06-10 → 2027-06-19 (+9d) | 2027-06-12 → 2027-06-21 (+9d) |  | 28d → 20.05d |
| 3 | **Telecommunication Works** | 2027-01-12 → 2026-08-08 (-157d) | 2027-05-19 → 2027-06-06 (+18d) |  |  |
| TAEXTCCL030002 | Drawpit and PVC Pipes Installation | 2027-05-02 → 2026-08-08 A (-267d) | 2027-05-05 → 2027-05-25 (+20d) | 0% → 67% | 0d → -8.27d |
| TAEXTCCL030003 | Road Crossing Ducts | 2027-05-06 → 2026-08-08 A (-271d) | 2027-05-08 → 2027-05-25 (+17d) | 0% → 67% | 55d → 40.07d |

| ID | Task | Start | Finish | Complete | Total float | Predecessors |
| --- | --- | --- | --- | --- | --- | --- |
| TAEXTCCL030001 | Trench Cut off | 2027-01-12 → 2027-03-13 (+60d) | 2027-01-19 → 2027-03-21 (+61d) |  | 45d → -5.61d |  |
| TAEXTCCL030004 | Trench Backfilling | 2027-05-09 → 2027-05-25 (+16d) | 2027-05-19 → 2027-06-06 (+18d) |  | 55d → 40.07d |  |
| 4 | **CCTV Works** | 2026-12-19 → 2027-01-06 (+18d) | 2027-07-26 → 2027-08-15 (+20d) |  |  |  |
| TAEXCCCL030001 | Pipe Installation with manhole | 2026-12-19 → 2027-01-06 (+18d) | 2026-12-30 → 2027-01-19 (+20d) |  | 0d → -3.55d |  |
| TAEXCCCL030002 | CCTV Swiches Lighting panels Installation | 2027-06-14 → 2027-07-03 (+19d) | 2027-06-28 → 2027-07-18 (+20d) |  | 0d → -3.55d |  |
| TAEXCCCL030003 | Cable laying and connected with Panels | 2027-06-29 → 2027-07-18 (+19d) | 2027-07-10 → 2027-07-29 (+19d) |  | 14d → -2.55d |  |
| TAEXCCCL030004 | Pole Installation with IP Outdoor CCTV POE Camera | 2027-07-11 → 2027-07-29 (+18d) | 2027-07-26 → 2027-08-15 (+20d) |  | 14d → -2.55d |  |
| 5 | **Potable Networks** | 2026-08-17 → 2026-06-09 (-69d) | 2027-01-25 → 2026-08-16 (-162d) |  |  |  |
| TAEXPTCL030001 | Excavation works for Trench | 2026-08-17 → 2026-06-09 A (-69d) | 2026-09-05 → 2026-07-25 A (-42d) | 0% → 100% | 0d → none |  |
| TAEXPTCL030003 | Install Pipes & Fittings | 2026-09-08 → 2026-06-21 A (-79d) | 2026-09-15 → 2026-07-25 A (-52d) | 0% → 100% | 0d → none |  |
| TAEXPTCL030002 | Bedding Works | 2026-09-06 → 2026-06-21 A (-77d) | 2026-09-07 → 2026-07-25 A (-44d) | 0% → 100% | 0d → none |  |
| TAEXPTCL030006 | Valve Chamber works | 2026-12-05 → 2026-06-25 A (-163d) | 2026-12-22 → 2026-08-11 A (-133d) | 0% → 100% | 1d → none |  |
| TAEXPTCL030004 | Backfilling Works for Trench | 2026-09-16 → 2026-06-30 A (-78d) | 2026-09-27 → 2026-07-25 A (-64d) | 0% → 100% | 0d → none |  |
| TAEXPTCL030008 | Install fire hydrent | 2026-12-05 → 2026-07-16 A (-142d) | 2026-12-10 → 2026-08-02 A (-130d) | 0% → 100% | 1d → none |  |
| TAEXPTCL030005 | Install Valves with fittings | 2026-10-26 → 2026-07-23 A (-95d) | 2026-10-29 → 2026-07-25 A (-96d) | 0% → 100% | 31d → none |  |
| TAEXPTCL030007 | Inspection Test | 2027-01-21 → 2026-08-15 A (-159d) | 2027-01-25 → 2026-08-16 A (-162d) | 0% → 100% | 157d → none |  |
| 6 | **TSE Networks** |  | 2027-04-20 → 2026-08-16 (-247d) |  |  |  |
| TAEXTSCL030001 | Excavation works for Trench | 2026-06-09 A | 2026-06-15 → 2026-07-25 A (+40d) | 0% → 100% | 54d → none |  |
| TAEXTSCL030002 | Bedding Works | 2026-06-16 → 2026-06-21 A (+5d) | 2026-06-17 → 2026-07-25 A (+38d) | 0% → 100% | 63d → none |  |
| TAEXTSCL030003 | Install Pipes & Fittings | 2026-06-18 → 2026-06-21 A (+3d) | 2026-06-25 → 2026-07-25 A (+30d) | 0% → 100% | 63d → none |  |
| TAEXTSCL030006 | Valve Chamber works | 2027-03-29 → 2026-06-25 A (-277d) | 2027-04-15 → 2026-08-12 A (-246d) | 0% → 100% | 88d → none |  |
| TAEXTSCL030004 | Backfilling Works for Trench | 2026-09-28 → 2026-06-28 A (-92d) | 2026-10-12 → 2026-07-25 A (-79d) | 0% → 100% | 0d → none |  |
| TAEXTSCL030005 | Install Valves with fittings | 2027-03-24 → 2026-07-23 A (-244d) | 2027-03-28 → 2026-07-25 A (-246d) | 0% → 100% | 77d → none |  |
| TAEXTSCL030007 | Inspection Test | 2027-04-17 → 2026-08-15 A (-245d) | 2027-04-20 → 2026-08-16 A (-247d) | 0% → 100% | 88d → none |  |
| 8 | **Storm Networks** |  | 2027-04-24 → 2026-09-26 (-210d) |  |  |  |
| TAEXSTCL0300051 | Manhole Installation with backfilling Part 01 | 2026-11-07 → 2026-06-06 A (-154d) | 2026-11-09 → 2026-08-02 A (-99d) | 0% → 100% | 0d → none |  |
| TAEXSTCL030006 | Install Catch Basin with UPVC Pipes & Fittings | 2026-11-10 → 2026-07-05 A (-128d) | 2026-11-19 → 2026-08-02 A (-109d) | 0% → 100% | 0d → none |  |
| TAEXSTCL0300041 | Backfilling Works for Trench Part 01 | 2026-10-13 → 2026-07-22 A (-83d) | 2026-10-17 → 2026-07-25 A (-84d) | 0% → 100% | 0d → none |  |
| TAEXSTCL0300031 | Install GRP Pipes & Fittings Part 01 | 2026-06-03 → 2026-07-23 A (+50d) | 2026-06-06 → 2026-07-25 A (+49d) | 0% → 100% | 89d → none |  |
| TAEXSTCL030007 | Leakage Test | 2027-04-21 → 2026-08-01 A (-263d) | 2027-04-24 → 2026-09-26 A (-210d) | 0% → 100% | 88d → none |  |
| 9 | **Local Road 04** |  | 2027-08-07 → 2027-08-11 (+4d) |  |  |  |
| 2 | **Road Works** |  | 2027-06-21 → 2027-06-09 (-12d) |  |  |  |
| TAEXRDCL0400011 | Road Excavation and Disposal Part 01 | 2026-11-21 → 2026-06-06 A (-168d) | 2026-11-23 → 2026-06-13 A (-163d) | 0% → 100% | 18d → none |  |
| TAEXRDCL0400021 | Backfilling Works for Road Part 01 | 2026-11-24 → 2026-06-06 A (-171d) | 2026-12-02 → 2026-06-16 A (-169d) | 0% → 100% | 18d → none |  |
| TAEXRDCL040003 | Subgrade Works | 2026-12-15 → 2026-07-12 A (-156d) | 2026-12-20 → 2026-07-18 A (-155d) | 0% → 100% | 12d → none |  |
| TAEXRDCL040004 | ABC aggregate Base Course Works | 2026-12-21 → 2026-07-19 A (-155d) | 2026-12-27 → 2026-07-26 A (-154d) | 0% → 100% | 90d → none |  |
| TAEXRDCL040005 | MBC1 layer | 2026-12-28 → 2026-08-02 A (-148d) | 2026-12-28 → 2026-08-05 A (-145d) | 0% → 100% | 90d → none |  |
| TAEXRDCL040006 | BBC Base Course | 2026-12-29 → 2026-08-02 A (-149d) | 2026-12-30 → 2026-08-06 A (-146d) | 0% → 100% | 90d → none |  |
| TAEXRDCL040008 | Precast Concret Kerps | 2027-04-15 → 2026-09-20 A (-207d) | 2027-05-03 → 2027-04-21 (-12d) | 0% → 63% | 0d → 2.35d |  |
| TAEXRDCL040007 | BWC Asphalt Wearing Course with RC | 2027-05-04 → 2027-04-21 (-13d) | 2027-05-26 → 2027-05-15 (-11d) |  | 29d → 39.33d |  |
| TAEXRDCL040009 | Precast Interlock Works | 2027-05-27 → 2027-05-15 (-12d) | 2027-06-09 → 2027-05-29 (-11d) |  | 29d → 39.33d |  |
| TAEXRDCL040010 | Stone Paving works | 2027-06-10 → 2027-05-29 (-12d) | 2027-06-17 → 2027-06-06 (-11d) |  | 29d → 39.33d |  |
| TAEXRDCL040011 | Road Marking | 2027-06-19 → 2027-06-06 (-13d) | 2027-06-19 → 2027-06-07 (-12d) |  | 29d → 39.33d |  |
| TAEXRDCL040012 | Traffic Sinage | 2027-06-20 → 2027-06-07 (-13d) | 2027-06-21 → 2027-06-09 (-12d) |  | 29d → 39.33d |  |
| 1 | **Electrical Works** | 2026-12-22 → 2026-06-30 (-175d) | 2027-06-14 → 2027-06-23 (+9d) |  |  |  |
| TAEXELCL040001 | Trench Cut off | 2026-12-22 → 2026-06-30 A (-175d) | 2027-01-06 → 2027-03-03 (+56d) | 0% → 3% | 0d → -24.67d |  |
| TAEXELCL040002 | Drawpit and PVC Pipes Installation | 2027-03-02 → 2026-07-04 A (-241d) | 2027-03-10 → 2027-04-04 (+25d) | 0% → 67% | 93d → 73.75d |  |
| TAEXELCL040003 | Road Crossing Ducts | 2027-03-11 → 2026-07-04 A (-250d) | 2027-03-13 → 2027-04-05 (+23d) | 0% → 67% | 93d → 73.75d |  |
| TAEXELCL040006 | Poles RC Foundation | 2027-03-11 → 2027-04-04 (+24d) | 2027-03-14 → 2027-04-07 (+24d) |  | 105d → 84.41d |  |
| TAEXELCL040004 | Trench Backfilling | 2027-03-14 → 2027-04-05 (+22d) | 2027-03-24 → 2027-04-17 (+24d) |  | 93d → 73.75d |  |
| TAEXELCL040008 | Lighting Pole Installation with Luminares | 2027-03-15 → 2027-04-07 (+23d) | 2027-03-20 → 2027-04-13 (+24d) |  | 108d → 87.41d |  |
| TAEXELCL040005 | Cables Pulling | 2027-03-25 → 2027-04-17 (+23d) | 2027-03-28 → 2027-04-20 (+23d) |  | 93d → 73.75d |  |
| TAEXELCL040009 | Install Substation & RMU | 2027-04-22 → 2027-04-20 (-2d) | 2027-05-02 → 2027-05-01 (-1d) |  | 85d → 86.75d |  |
| TAEXELCL040007 | Earthing cables | 2027-06-13 → 2027-06-21 (+8d) | 2027-06-14 → 2027-06-23 (+9d) |  | 28d → 20.05d |  |
| 3 | **Telecommunication Works** | 2027-01-20 → 2026-06-30 (-204d) | 2027-05-24 → 2027-06-06 (+13d) |  |  |  |
| TAEXTCCL040001 | Trench Cut off | 2027-01-20 → 2026-06-30 A (-204d) | 2027-01-27 → 2027-03-28 (+60d) | 0% → 2% | 45d → -5.61d |  |
| TAEXTCCL040002 | Drawpit and PVC Pipes Installation | 2027-05-06 → 2026-07-04 A (-306d) | 2027-05-10 → 2026-07-05 A (-309d) | 0% → 100% | 0d → none |  |
| TAEXTCCL040003 | Road Crossing Ducts | 2027-05-11 → 2026-07-04 A (-311d) | 2027-05-12 → 2026-07-05 A (-311d) | 0% → 100% | 51d → none |  |
| TAEXTCCL040004 | Trench Backfilling | 2027-05-13 → 2027-05-25 (+12d) | 2027-05-24 → 2027-06-06 (+13d) |  | 51d → 40.73d |  |
| 4 | **CCTV Works** | 2026-12-31 → 2027-01-19 (+19d) | 2027-08-07 → 2027-08-11 (+4d) |  |  |  |
| TAEXCCCL040001 | Pipe Installation with manhole | 2026-12-31 → 2027-01-19 (+19d) | 2027-01-11 → 2027-01-31 (+20d) |  | 0d → -3.55d |  |
| TAEXCCCL040002 | CCTV Swiches Lighting panels Installation | 2027-06-29 → 2027-07-03 (+4d) | 2027-07-10 → 2027-07-14 (+4d) |  | 0d → -3.55d | TAEXCCCL040001, TAEXCCCL030002 → TAEXCCCL040001, TAEXCCCL030002 SS |
| TAEXCCCL040003 | Cable laying and connected with Panels | 2027-07-11 → 2027-07-14 (+3d) | 2027-07-21 → 2027-07-26 (+5d) |  | 4d → 0.45d |  |
| TAEXCCCL040004 | Pole Installation with IP Outdoor CCTV POE Camera | 2027-07-22 → 2027-07-26 (+4d) | 2027-08-07 → 2027-08-11 (+4d) |  | 4d → 0.45d |  |
| 5 | **Potable Networks** | 2026-09-06 → 2026-06-14 (-84d) | 2027-01-20 → 2026-07-08 (-196d) |  |  |  |
| TAEXPTCL040001 | Excavation works for Trench | 2026-09-06 → 2026-06-14 A (-84d) | 2026-09-12 → 2026-06-21 A (-83d) | 0% → 100% | 0d → none |  |
| TAEXPTCL040003 | Install Pipes & Fittings | 2026-09-26 → 2026-06-22 A (-96d) | 2026-10-03 → 2026-06-23 A (-102d) | 0% → 100% | 37d → none |  |
| TAEXPTCL040002 | Bedding Works | 2026-09-13 → 2026-06-22 A (-83d) | 2026-09-14 → 2026-06-23 A (-83d) | 0% → 100% | 0d → none |  |
| TAEXPTCL040007 | Valve Chamber works | 2026-12-23 → 2026-06-23 A (-183d) | 2027-01-16 → 2026-07-02 A (-198d) | 0% → 100% | 149d → none |  |
| TAEXPTCL040004 | Backfilling Works for Trench | 2026-10-11 → 2026-06-25 A (-108d) | 2026-10-25 → 2026-06-28 A (-119d) | 0% → 100% | 31d → none |  |

| ID | Task | Start | Finish | Complete | Total float |
| --- | --- | --- | --- | --- | --- |
| TAEXPTCL040005 | Install Valves with fittings | 2026-10-21 → 2026-06-27 A (-116d) | 2026-10-25 → 2026-06-30 A (-117d) | 0% → 100% | 31d → none |
| TAEXPTCL040006 | Install fire hydrent | 2026-11-28 → 2026-06-28 A (-153d) | 2026-12-03 → 2026-06-30 A (-156d) | 0% → 100% | 1d → none |
| TAEXPTCL040008 | Inspection Test | 2027-01-17 → 2026-07-08 A (-193d) | 2027-01-20 → 2026-07-08 A (-196d) | 0% → 100% | 157d → none |
| 6 | **TSE Networks** | 2026-06-03 → 2026-06-14 (+11d) | 2027-04-15 → 2026-08-20 (-238d) |  |  |
| TAEXTSCL040001 | Excavation works for Trench | 2026-06-03 → 2026-06-14 A (+11d) | 2026-06-08 → 2026-06-21 A (+13d) | 0% → 100% | 54d → none |
| TAEXTSCL040002 | Bedding Works | 2026-09-15 → 2026-06-21 A (-86d) | 2026-09-16 → 2026-06-23 A (-85d) | 0% → 100% | 0d → none |
| TAEXTSCL040003 | Install Pipes & Fittings | 2026-09-17 → 2026-06-21 A (-88d) | 2026-09-24 → 2026-06-23 A (-93d) | 0% → 100% | 31d → none |
| TAEXTSCL040006 | Valve Chamber works | 2027-03-24 → 2026-06-23 A (-274d) | 2027-04-11 → 2026-07-02 A (-283d) | 0% → 100% | 92d → none |
| TAEXTSCL040004 | Backfilling Works for Trench | 2026-09-26 → 2026-06-25 A (-93d) | 2026-10-10 → 2026-07-02 A (-100d) | 0% → 100% | 31d → none |
| TAEXTSCL040005 | Install Valves with fittings | 2027-03-20 → 2026-06-28 A (-265d) | 2027-03-23 → 2026-06-30 A (-266d) | 0% → 100% | 77d → none |
| TAEXTSCL040007 | Inspection Test | 2027-04-12 → 2026-08-20 A (-235d) | 2027-04-15 → 2026-08-20 A (-238d) | 0% → 100% | 92d → none |
| 8 | **Storm Networks** |  | 2027-04-19 → 2026-08-30 (-232d) |  |  |
| TAEXSTCL0400011 | Excavation works for Trench Part 01 | 2026-06-03 → 2026-06-06 A (+3d) | 2026-06-15 → 2026-06-20 A (+5d) | 0% → 100% | 43d → none |
| TAEXSTCL0400021 | Bedding Works Part 01 | 2026-09-17 → 2026-06-06 A (-103d) | 2026-09-19 → 2026-06-21 A (-90d) | 0% → 100% | 0d → none |
| TAEXSTCL0400031 | Install GRP Pipes & Fittings Part 01 | 2026-09-20 → 2026-06-23 A (-89d) | 2026-09-28 → 2026-06-24 A (-96d) | 0% → 100% | 0d → none |
| TAEXSTCL040006 | Install Catch Basin with UPVC Pipes & Fittings | 2026-11-21 → 2026-06-26 A (-148d) | 2026-12-01 → 2026-07-05 A (-149d) | 0% → 100% | 0d → none |
| TAEXSTCL0400051 | Manhole Installation with backfilling Part 01 | 2026-11-05 → 2026-06-27 A (-131d) | 2026-11-19 → 2026-06-28 A (-144d) | 0% → 100% | 0d → none |
| TAEXSTCL0400041 | Backfilling Works for Trench Part 01 | 2026-10-11 → 2026-06-27 A (-106d) | 2026-10-27 → 2026-06-28 A (-121d) | 0% → 100% | 0d → none |
| TAEXSTCL0400071 | Leakage Test Part 01 | 2027-04-17 → 2026-07-08 A (-283d) | 2027-04-19 → 2026-08-30 A (-232d) | 0% → 100% | 92d → none |
| 2 | **Local Road 05** |  | 2027-08-11 → 2027-08-16 (+5d) |  |  |
| 3 | **Road Works** |  | 2027-06-07 → 2027-06-15 (+8d) |  |  |
| TAEXRDCL050003 | Subgrade Works | 2026-12-09 → 2026-06-21 A (-171d) | 2026-12-14 → 2026-07-21 A (-146d) | 0% → 100% | 12d → none |
| TAEXRDCL050004 | ABC aggregate Base Course Works | 2027-01-02 → 2026-07-04 A (-182d) | 2027-01-07 → 2026-08-06 A (-154d) | 0% → 100% | 83d → none |
| TAEXRDCL050005 | MBC1 layer | 2027-01-09 → 2026-07-15 A (-178d) | 2027-01-09 → 2026-08-11 A (-151d) | 0% → 100% | 83d → none |
| TAEXRDCL050006 | BBC Base Course | 2027-01-10 → 2026-07-18 A (-176d) | 2027-01-11 → 2026-08-16 A (-148d) | 0% → 100% | 83d → none |
| TAEXRDCL050008 | Precast Concret Kerps | 2027-01-12 → 2026-09-20 A (-114d) | 2027-01-31 → 2026-12-05 (-57d) | 0% → 64% | 94d → 150.34d |
| TAEXRDCL050007 | BWC Asphalt Wearing Course with RC | 2027-05-13 → 2027-05-20 (+7d) | 2027-05-13 → 2027-05-22 (+9d) |  | 41d → 34.1d |
| TAEXRDCL050009 | Precast Interlock Works | 2027-05-15 → 2027-05-22 (+7d) | 2027-05-31 → 2027-06-08 (+8d) |  | 41d → 34.1d |
| TAEXRDCL050010 | Stone Paving works | 2027-06-01 → 2027-06-08 (+7d) | 2027-06-03 → 2027-06-12 (+9d) |  | 41d → 34.1d |
| TAEXRDCL050011 | Road Marking | 2027-06-05 → 2027-06-12 (+7d) | 2027-06-05 → 2027-06-13 (+8d) |  | 41d → 34.1d |
| TAEXRDCL050012 | Traffic Sinage | 2027-06-06 → 2027-06-13 (+7d) | 2027-06-07 → 2027-06-15 (+8d) |  | 41d → 34.1d |
| 1 | **Electrical Works** | 2027-01-07 → 2026-06-21 (-200d) | 2027-06-16 → 2027-06-26 (+10d) |  |  |
| TAEXELCL050003 | Road Crossing Ducts | 2027-03-11 → 2026-06-21 A (-263d) | 2027-03-13 → 2026-06-24 A (-262d) | 0% → 100% | 95d → none |
| TAEXELCL050001 | Trench Cut off | 2027-01-07 → 2026-06-22 A (-199d) | 2027-01-20 → 2027-03-16 (+55d) | 0% → 6% | 0d → -24.67d |
| TAEXELCL050002 | Drawpit and PVC Pipes Installation | 2027-03-02 → 2026-06-23 A (-252d) | 2027-03-10 → 2026-06-24 A (-259d) | 0% → 100% | 78d → none |
| TAEXELCL050004 | Trench Backfilling | 2027-03-14 → 2027-03-31 (+17d) | 2027-03-24 → 2027-04-12 (+19d) |  | 95d → 79.05d |
| TAEXELCL050006 | Poles RC Foundation | 2027-03-11 → 2027-03-31 (+20d) | 2027-03-14 → 2027-04-04 (+21d) |  | 78d → 60.05d |
| TAEXELCL050008 | Lighting Pole Installation with Luminares | 2027-03-15 → 2027-04-04 (+20d) | 2027-03-20 → 2027-04-10 (+21d) |  | 78d → 60.05d |
| TAEXELCL050005 | Cables Pulling | 2027-03-25 → 2027-04-12 (+18d) | 2027-03-28 → 2027-04-15 (+18d) |  | 95d → 79.05d |
| TAEXELCL050007 | Earthing cables | 2027-06-15 → 2027-06-23 (+8d) | 2027-06-16 → 2027-06-26 (+10d) |  | 28d → 20.05d |
| 2 | **Telecommunication Works** | 2027-01-28 → 2026-06-20 (-222d) | 2027-05-29 → 2027-06-06 (+8d) |  |  |
| TAEXTCCL050002 | Drawpit and PVC Pipes Installation | 2027-05-11 → 2026-06-20 A (-325d) | 2027-05-15 → 2026-06-21 A (-328d) | 0% → 100% | 0d → none |
| TAEXTCCL050003 | Road Crossing Ducts | 2027-05-16 → 2026-06-22 A (-328d) | 2027-05-17 → 2026-06-24 A (-327d) | 0% → 100% | 40d → none |
| TAEXTCCL050001 | Trench Cut off | 2027-01-28 → 2026-06-22 A (-220d) | 2027-02-04 → 2027-04-05 (+60d) | 0% → 4% | 45d → -5.61d |
| TAEXTCCL050004 | Trench Backfilling | 2027-05-18 → 2027-05-25 (+7d) | 2027-05-29 → 2027-06-06 (+8d) |  | 40d → 33.73d |
| 4 | **CCTV Works** | 2027-01-12 → 2027-01-31 (+19d) | 2027-08-11 → 2027-08-16 (+5d) |  |  |
| TAEXCCCL050001 | Pipe Installation with manhole | 2027-01-12 → 2027-01-31 (+19d) | 2027-01-23 → 2027-02-11 (+19d) |  | 0d → -3.55d |
| TAEXCCCL050002 | CCTV Swiches Lighting panels Installation | 2027-07-11 → 2027-07-14 (+3d) | 2027-07-21 → 2027-07-26 (+5d) |  | 0d → -3.55d |
| TAEXCCCL050003 | Cable laying and connected with Panels | 2027-07-22 → 2027-07-26 (+4d) | 2027-08-02 → 2027-08-07 (+5d) |  | 0d → -3.55d |
| TAEXCCCL050004 | Pole Installation with IP Outdoor CCTV POE Camera | 2027-08-03 → 2027-08-07 (+4d) | 2027-08-11 → 2027-08-16 (+5d) |  | 0d → -3.55d |
| 5 | **Potable Networks** |  | 2027-04-08 → 2026-07-05 (-277d) |  |  |
| TAEXPTCL0500051 | Install Valves with fittings Part 01 | 2026-10-08 → 2026-06-06 A (-124d) | 2026-11-04 → 2026-06-20 A (-137d) | 0% → 100% | 18d → none |
| TAEXPTCL0500061 | Install fire hydrent Part 01 | 2026-11-25 → 2026-06-06 A (-172d) | 2026-11-26 → 2026-06-14 A (-165d) | 0% → 100% | 1d → none |
| TAEXPTCL0500071 | Valve Chamber works Part 01 | 2026-11-28 → 2026-06-06 A (-175d) | 2026-12-07 → 2026-06-20 A (-170d) | 0% → 100% | 52d → none |
| TAEXPTCL050008 | Inspection Test | 2027-04-05 → 2026-07-02 A (-277d) | 2027-04-08 → 2026-07-05 A (-277d) | 0% → 100% | 77d → none |
| 6 | **TSE Networks** |  | 2027-04-13 → 2026-07-05 (-282d) |  |  |
| TAEXTSCL0500051 | Install Valves with fittings Part 01 | 2027-03-17 → 2026-06-06 A (-284d) | 2027-03-18 → 2026-06-20 A (-271d) | 0% → 100% | 77d → none |
| TAEXTSCL0500061 | Valve Chamber works Part 01 | 2027-03-20 → 2026-06-06 A (-287d) | 2027-03-28 → 2026-06-20 A (-281d) | 0% → 100% | 87d → none |
| TAEXTSCL050007 | Inspection Test | 2027-04-10 → 2026-07-02 A (-282d) | 2027-04-13 → 2026-07-05 A (-282d) | 0% → 100% | 77d → none |
| 7 | **Sewerage Networks** |  | 2027-04-15 → 2026-06-30 (-289d) |  |  |
| TAEXSWCL0500031 | Install GRP Pipes & Fittings Part 01 | 2027-03-20 → 2026-06-06 A (-287d) | 2027-03-24 → 2026-06-07 A (-290d) | 0% → 100% | 79d → none |
| TAEXSWCL0500051 | Manhole Installation with backfilling Part 01 | 2027-04-03 → 2026-06-06 A (-301d) | 2027-04-11 → 2026-06-24 A (-291d) | 0% → 100% | 79d → none |
| TAEXSWCL0500041 | Backfilling Works for Trench Part 01 | 2027-03-25 → 2026-06-27 A (-271d) | 2027-03-30 → 2026-06-28 A (-275d) | 0% → 100% | 79d → none |
| TAEXSWCL0500061 | Leakage Test Part 01 | 2027-04-14 → 2026-06-29 A (-289d) | 2027-04-15 → 2026-06-30 A (-289d) | 0% → 100% | 77d → none |
| 8 | **Storm Networks** |  | 2027-04-19 → 2026-06-30 (-293d) |  |  |
| TAEXSTCL0500051 | Manhole Installation with backfilling Part 01 | 2026-10-20 → 2026-06-06 A (-136d) | 2026-10-28 → 2026-06-08 A (-142d) | 0% → 100% | 0d → none |
| TAEXSTCL050007 | Leakage Test | 2027-04-17 → 2026-06-06 A (-315d) | 2027-04-19 → 2026-06-30 A (-293d) | 0% → 100% | 77d → none |
| TAEXSTCL050006 | Install Catch Basin with UPVC Pipes & Fittings | 2026-10-29 → 2026-06-09 A (-142d) | 2026-11-09 → 2026-06-20 A (-142d) | 0% → 100% | 0d → none |
| 11 | **ZONE 3** |  | 2027-08-30 → 2027-09-27 (+28d) |  |  |
| 1 | **Local Road 01** |  | 2027-06-20 → 2027-08-01 (+42d) |  |  |

| ID | Task | Start | Finish | Complete | Total float | Other |
| --- | --- | --- | --- | --- | --- | --- |
| 12 | **Road Works** |  | 2027-06-17 → 2027-06-15 (-2d) |  |  |  |
| TAEXRDCL010004 | ABC aggregate Base Course Works | 2027-01-16 → 2026-08-23 A (-146d) | 2027-01-24 → 2027-02-07 (+14d) | 0% → 84% | 65d → 58.89d |  |
| TAEXRDCL0100031 | Subgrade Works Part 01 | 2027-01-12 → 2026-08-23 A (-142d) | 2027-01-14 → 2026-08-30 A (-137d) | 0% → 100% | 1d → none |  |
| TAEXRDCL010005 | MBC1 layer | 2027-01-25 → 2026-09-06 A (-141d) | 2027-01-25 → 2027-02-07 (+13d) | 0% → 84% | 65d → 58.89d |  |
| TAEXRDCL010006 | BBC Base Course | 2027-01-26 → 2026-09-10 A (-138d) | 2027-01-28 → 2027-02-08 (+11d) | 0% → 84% | 65d → 58.89d |  |
| TAEXRDCL010008 | Precast Concret Kerps | 2027-04-15 → 2026-10-04 A (-193d) | 2027-05-01 → 2027-04-28 (-3d) | 0% → 15% | 0d → 2.35d |  |
| TAEXRDCL010007 | BWC Asphalt Wearing Course with RC | 2027-05-02 → 2027-04-28 (-4d) | 2027-05-02 → 2027-04-29 (-3d) |  | 39d → 41.35d |  |
| TAEXRDCL010009 | Precast Interlock Works | 2027-05-24 → 2027-05-20 (-4d) | 2027-06-09 → 2027-06-07 (-2d) |  | 39d → 41.35d |  |
| TAEXRDCL010010 | Stone Paving works | 2027-06-10 → 2027-06-07 (-3d) | 2027-06-14 → 2027-06-12 (-2d) |  | 39d → 41.35d |  |
| TAEXRDCL010011 | Road Marking | 2027-06-15 → 2027-06-12 (-3d) | 2027-06-15 → 2027-06-13 (-2d) |  | 39d → 41.35d |  |
| TAEXRDCL010012 | Traffic Sinage | 2027-06-16 → 2027-06-13 (-3d) | 2027-06-17 → 2027-06-15 (-2d) |  | 39d → 41.35d |  |
| 1 | **Electrical Works** | 2027-03-15 → 2026-08-29 (-198d) | 2027-06-20 → 2027-08-01 (+42d) |  |  |  |
| TAEXELCL010002 | Road Crossing Ducts | 2027-04-07 → 2026-08-29 A (-221d) | 2027-04-11 → 2027-05-23 (+42d) | 0% → 29% | 27d → -8.04d |  |
| TAEXELCL010003 | Drawpit and PVC Pipes Installation | 2027-03-29 → 2026-08-29 A (-212d) | 2027-04-06 → 2027-05-19 (+43d) | 0% → 29% | 27d → -8.04d |  |
| TAEXELCL010001 | Trench Cut off | 2027-03-15 → 2027-04-28 (+44d) | 2027-03-28 → 2027-05-12 (+45d) |  | 0d → -24.67d |  |
| TAEXELCL010006 | Poles RC Foundation | 2027-04-07 → 2027-05-19 (+42d) | 2027-04-10 → 2027-05-23 (+43d) |  | 86d → 49.8d |  |
| TAEXELCL010004 | Trench Backfilling | 2027-04-12 → 2027-05-23 (+41d) | 2027-04-22 → 2027-06-03 (+42d) |  | 27d → -8.04d |  |
| TAEXELCL010008 | Lighting Pole Installation with Luminares | 2027-04-11 → 2027-05-23 (+42d) | 2027-04-15 → 2027-05-29 (+44d) |  | 92d → 55.8d |  |
| TAEXELCL010005 | Cables Pulling | 2027-06-15 → 2027-07-26 (+41d) | 2027-06-17 → 2027-07-29 (+42d) |  | 27d → -8.04d |  |
| TAEXELCL010007 | Earthing cables | 2027-06-19 → 2027-07-29 (+40d) | 2027-06-20 → 2027-08-01 (+42d) |  | 27d → -8.04d |  |
| 2 | **Telecommunication Works** | 2027-03-01 → 2027-04-28 (+58d) | 2027-06-02 → 2027-06-13 (+11d) |  |  |  |
| TAEXTCCL010001 | Trench Cut off | 2027-03-01 → 2027-04-28 (+58d) | 2027-03-08 → 2027-05-06 (+59d) |  | 45d → -5.61d |  |
| TAEXTCCL010002 | Drawpit and PVC Pipes Installation | 2027-05-16 → 2027-05-25 (+9d) | 2027-05-19 → 2027-05-30 (+11d) |  | 0d → -8.27d |  |
| TAEXTCCL010003 | Road Crossing Ducts | 2027-05-20 → 2027-05-30 (+10d) | 2027-05-22 → 2027-06-01 (+10d) |  | 50d → 41.73d |  |
| TAEXTCCL010004 | Trench Backfilling | 2027-05-23 → 2027-06-01 (+9d) | 2027-06-02 → 2027-06-13 (+11d) |  | 50d → 41.73d |  |
| 16 | **CCTV Works** | 2027-03-22 → 2027-04-10 (+19d) | 2027-05-18 → 2027-06-07 (+20d) |  |  |  |
| TAEXCCCL010001 | Pipe Installation with manhole | 2027-03-22 → 2027-04-10 (+19d) | 2027-04-04 → 2027-04-24 (+20d) |  | 0d → -2.55d |  |
| TAEXCCCL010002 | CCTV Swiches Lighting panels Installation | 2027-04-05 → 2027-04-24 (+19d) | 2027-04-19 → 2027-05-09 (+20d) |  | 73d → 56.45d |  |
| TAEXCCCL010003 | Cable laying and connected with Panels | 2027-04-20 → 2027-05-09 (+19d) | 2027-05-01 → 2027-05-20 (+19d) |  | 73d → 56.45d |  |
| TAEXCCCL010004 | Pole Installation with IP Outdoor CCTV POE Camera | 2027-05-02 → 2027-05-20 (+18d) | 2027-05-18 → 2027-06-07 (+20d) |  | 73d → 56.45d |  |
| 17 | **Potable Networks** |  | 2027-05-20 → 2027-03-10 (-71d) |  |  |  |
| TAEXPTCL010002 | Bedding Works | 2026-09-17 → 2026-06-20 A (-89d) | 2026-09-19 → 2026-10-10 (+21d) | 0% → 85% | 76d → 74.62d |  |
| TAEXPTCL010003 | Install Pipes & Fittings | 2027-03-01 → 2026-06-20 A (-254d) | 2027-03-09 → 2027-01-06 (-62d) | 0% → 75% | 19d → 89.58d |  |
| TAEXPTCL010004 | Backfilling Works for Trench | 2027-03-10 → 2026-06-30 A (-253d) | 2027-03-27 → 2027-01-11 (-75d) | 0% → 75% | 28d → 126.31d |  |
| TAEXPTCL0100011 | Excavation works for Trench Part 01 | 2026-09-13 → 2026-07-15 A (-60d) | 2026-09-16 → 2026-10-05 (+19d) | 0% → 85% | 1d → 8.56d |  |
| TAEXPTCL010007 | Valve Chamber works | 2027-04-29 → 2026-07-26 A (-277d) | 2027-05-16 → 2027-03-07 (-70d) | 0% → 90% | 1d → 68.36d |  |
| TAEXPTCL010005 | Install Valves with fittings | 2027-03-25 → 2026-08-08 A (-229d) | 2027-03-29 → 2027-01-13 (-75d) | 0% → 90% | 28d → 126.31d |  |
| TAEXPTCL010006 | Install fire hydrent | 2027-03-10 → 2026-08-08 A (-214d) | 2027-03-16 → 2027-01-06 (-69d) | 0% → 95% | 29d → 94.56d |  |
| TAEXPTCL010008 | Inspection Test | 2027-05-17 → 2026-08-23 A (-267d) | 2027-05-20 → 2027-03-10 (-71d) | 0% → 20% | 65d → 126.76d |  |
| 3 | **TSE Networks** |  | 2027-05-17 → 2027-04-22 (-25d) |  |  |  |
| TAEXTSCL010002 | Bedding Works | 2026-06-21 → 2026-06-15 A (-6d) | 2026-06-22 → 2026-10-10 (+110d) | 0% → 69% | 150d → 74.62d |  |
| TAEXTSCL010003 | Install Pipes & Fittings | 2027-03-29 → 2026-06-20 A (-282d) | 2027-04-06 → 2027-04-14 (+8d) | 0% → 69% | 54d → 66.66d |  |
| TAEXTSCL010004 | Backfilling Works for Trench | 2027-04-07 → 2026-06-27 A (-284d) | 2027-04-24 → 2027-04-20 (-4d) | 0% → 69% | 58d → 66.66d |  |
| TAEXTSCL0100011 | Excavation works for Trench Part 01 | 2026-06-16 → 2026-07-15 A (+29d) | 2026-06-20 → 2026-10-08 (+110d) | 0% → 10% | 54d → 10.44d |  |
| TAEXTSCL010006 | Valve Chamber works | 2027-04-25 → 2026-07-19 A (-280d) | 2027-05-12 → 2027-04-21 (-21d) | 0% → 90% | 78d → 99.07d |  |
| TAEXTSCL010005 | Install Valves with fittings | 2027-04-20 → 2026-08-08 A (-255d) | 2027-04-24 → 2027-04-20 (-4d) | 0% → 90% | 58d → 66.66d |  |
| TAEXTSCL010007 | Inspection Test | 2027-05-13 → 2026-08-23 A (-263d) | 2027-05-17 → 2027-04-22 (-25d) | 0% → 69% | 78d → 99.07d |  |
| 13 | **Sewerage Networks** |  | 2027-04-07 → 2026-12-10 (-118d) |  |  |  |
| TAEXSWCL0100011 | Excavation works for Trench Part 01 | 2027-02-09 → 2026-07-15 A (-209d) | 2027-02-20 → 2026-10-26 (-117d) | 0% → 5% | 2d → 131.03d |  |
| TAEXSWCL0100021 | Bedding Works Part 01 | 2027-02-21 → 2026-07-25 A (-211d) | 2027-02-22 → 2026-10-28 (-117d) | 0% → 5% | 97d → 198d |  |
| TAEXSWCL0100031 | Install GRP Pipes & Fittings Part 01 | 2027-02-23 → 2026-07-25 A (-213d) | 2027-03-06 → 2026-11-08 (-118d) | 0% → 5% | 97d → 198d |  |
| TAEXSWCL0100051 | Manhole Installation with backfilling Part 01 | 2027-03-24 → 2026-07-28 A (-239d) | 2027-04-04 → 2026-12-07 (-118d) | 0% → 5% | 97d → 198d |  |
| TAEXSWCL0100041 | Backfilling Works for Trench Part 01 | 2027-03-10 → 2026-08-08 A (-214d) | 2027-03-23 → 2026-11-25 (-118d) | 0% → 5% | 97d → 198d |  |
| TAEXSWCL010006 | Leakage Test | 2027-04-05 → 2026-12-08 (-118d) | 2027-04-07 → 2026-12-10 (-118d) |  | 97d → 198d |  |
| 4 | **Storm Networks** |  | 2026-11-19 → 2026-12-16 (+27d) |  |  |  |
| TAEXSTCL0100051 | Manhole Installation with backfilling Part 01 | 2026-10-20 → 2026-06-06 A (-136d) | 2026-10-28 → 2026-12-01 (+34d) | 0% → 65% | 69d → 58.89d |  |
| TAEXSTCL0100011 | Excavation works for Trench & Box Culvert Part 01 | 2026-06-16 → 2026-07-15 A (+29d) | 2026-07-14 → 2026-10-08 (+86d) | 0% → 85% | 43d → 12.98d |  |
| TAEXSTCL010006 | Install Catch Basin with UPVC Pipes & Fittings | 2026-10-29 → 2026-07-26 A (-95d) | 2026-11-10 → 2026-12-07 (+27d) | 0% → 55% | 69d → 58.89d |  |
| TAEXSTCL0100041 | Backfilling Works for Trench and Boxculvert Part 01 | 2026-06-18 → 2026-08-02 A (+45d) | 2026-07-01 → 2026-10-18 (+109d) | 0% → 5% | 163d → 94.03d |  |
| TAEXSTCL0100091 | Install Box Culvert Part 2 Part 01 | 2026-06-03 → 2026-08-02 A (+60d) | 2026-06-14 → 2026-08-30 A (+77d) | 0% → 100% | 163d → none |  |
| TAEXSTCL0100021 | Bedding Works Part 01 | 2026-09-20 → 2026-08-02 A (-49d) | 2026-09-24 → 2026-10-11 (+17d) | 0% → 85% | 76d → 74.62d |  |
| TAEXSTCL0100031 | Install GRP Pipes & Fittings Part 01 | 2026-09-26 → 2026-08-02 A (-55d) | 2026-10-06 → 2026-10-14 (+8d) | 0% → 70% | 76d → 74.62d |  |
| TAEXSTCL010007 | Leakage Test | 2026-11-17 → 2026-12-13 (+26d) | 2026-11-19 → 2026-12-16 (+27d) |  | 69d → 58.89d |  |
| 5 | **Local Road 06** |  | 2027-06-30 → 2027-08-15 (+46d) |  |  |  |
| 12 | **Road Works** |  | 2027-06-27 → 2027-06-24 (-3d) |  |  |  |
| TAEXRDCL060000 | Asphalt Milling and Deisposal | 2027-03-09 → 2026-07-25 A (-227d) | 2027-03-13 → 2026-07-26 A (-230d) | 0% → 100% | 2d → none | resources COST [99400]; DUMP TRUCK [64 h]; DUMP TRUCK DRIVER [64 h]; MILLING MACHINE [64 h]; MILLING MACHINE OPERATOR [64 h] → DUMP TRUCK [64 h]; MILLING MACHINE [64 h]; DUMP TRUCK DRIVER [64 h]; MILLING MACHINE OPERATOR [64 h]; COST [99400] |
| TAEXRDCL0600031 | Subgrade Works Part 01 | 2027-03-14 → 2027-02-24 (-18d) | 2027-03-17 → 2027-03-01 (-16d) |  | 12d → 37.21d |  |
| TAEXRDCL060004 | ABC aggregate Base Course Works | 2027-03-18 → 2027-03-01 (-17d) | 2027-03-27 → 2027-03-10 (-17d) |  | 12d → 37.21d |  |
| TAEXRDCL060005 | MBC1 layer | 2027-04-05 → 2027-03-10 (-26d) | 2027-04-05 → 2027-03-11 (-25d) |  | 5d → 37.21d |  |
| TAEXRDCL060006 | BBC Base Course | 2027-04-06 → 2027-03-11 (-26d) | 2027-04-12 → 2027-03-18 (-25d) |  | 5d → 37.21d |  |

| ID | Task | Start | Finish | Complete | Total float |
| --- | --- | --- | --- | --- | --- |
| TAEXRDCL060008 | Precast Concret Kerps | 2027-05-02 → 2027-04-28 (-4d) | 2027-05-22 → 2027-05-19 (-3d) |  | 0d → 2.35d |
| TAEXRDCL060007 | BWC Asphalt Wearing Course with RC | 2027-05-23 → 2027-05-19 (-4d) | 2027-05-24 → 2027-05-22 (-2d) |  | 31d → 33.35d |
| TAEXRDCL060009 | Precast Interlock Works | 2027-05-25 → 2027-05-22 (-3d) | 2027-06-09 → 2027-06-07 (-2d) |  | 31d → 33.35d |
| TAEXRDCL060010 | Stone Paving works | 2027-06-10 → 2027-06-07 (-3d) | 2027-06-23 → 2027-06-21 (-2d) |  | 31d → 33.35d |
| TAEXRDCL060011 | Road Marking | 2027-06-24 → 2027-06-21 (-3d) | 2027-06-24 → 2027-06-22 (-2d) |  | 31d → 33.35d |
| TAEXRDCL060012 | Traffic Sinage | 2027-06-26 → 2027-06-22 (-4d) | 2027-06-27 → 2027-06-24 (-3d) |  | 31d → 33.35d |
| 1 | **Electrical Works** | 2027-03-29 → 2027-05-12 (+44d) | 2027-06-30 → 2027-08-15 (+46d) |  |  |
| TAEXELCL060001 | Trench Cut off | 2027-03-29 → 2027-05-12 (+44d) | 2027-04-08 → 2027-05-24 (+46d) |  | 0d → -24.67d |
| TAEXELCL060002 | Drawpit and PVC Pipes Installation | 2027-04-10 → 2027-05-24 (+44d) | 2027-04-14 → 2027-05-30 (+46d) |  | 20d → -18.52d |
| TAEXELCL060003 | Road Crossing Ducts | 2027-04-15 → 2027-05-30 (+45d) | 2027-04-17 → 2027-06-01 (+45d) |  | 20d → -18.52d |
| TAEXELCL060006 | Poles RC Foundation | 2027-04-15 → 2027-05-30 (+45d) | 2027-04-19 → 2027-06-03 (+45d) |  | 80d → 41.48d |
| TAEXELCL060004 | Trench Backfilling | 2027-04-18 → 2027-06-01 (+44d) | 2027-05-03 → 2027-06-17 (+45d) |  | 20d → -18.52d |
| TAEXELCL060008 | Lighting Pole Installation with Luminares | 2027-04-20 → 2027-06-03 (+44d) | 2027-04-26 → 2027-06-10 (+45d) |  | 83d → 44.48d |
| TAEXELCL060005 | Cables Pulling | 2027-06-26 → 2027-08-09 (+44d) | 2027-06-28 → 2027-08-12 (+45d) |  | 20d → -18.52d |
| TAEXELCL060007 | Earthing cables | 2027-06-29 → 2027-08-12 (+44d) | 2027-06-30 → 2027-08-15 (+46d) |  | 20d → -18.52d |
| 2 | **Telecommunication Works** | 2027-03-09 → 2027-05-06 (+58d) | 2027-06-13 → 2027-06-23 (+10d) |  |  |
| TAEXTCCL060001 | Trench Cut off | 2027-03-09 → 2027-05-06 (+58d) | 2027-03-20 → 2027-05-18 (+59d) |  | 45d → -5.61d |
| TAEXTCCL060002 | Drawpit and PVC Pipes Installation | 2027-05-20 → 2027-05-30 (+10d) | 2027-05-25 → 2027-06-05 (+11d) |  | 0d → -8.27d |
| TAEXTCCL060003 | Road Crossing Ducts | 2027-05-26 → 2027-06-05 (+10d) | 2027-05-27 → 2027-06-07 (+11d) |  | 41d → 32.73d |
| TAEXTCCL060004 | Trench Backfilling | 2027-05-29 → 2027-06-07 (+9d) | 2027-06-13 → 2027-06-23 (+10d) |  | 41d → 32.73d |
| 17 | **CCTV Works** | 2027-04-05 → 2027-04-24 (+19d) | 2027-06-01 → 2027-06-21 (+20d) |  |  |
| TAEXCCCL060001 | Pipe Installation with manhole | 2027-04-05 → 2027-04-24 (+19d) | 2027-04-18 → 2027-05-08 (+20d) |  | 0d → -2.55d |
| TAEXCCCL060002 | CCTV Swiches Lighting panels Installation | 2027-04-19 → 2027-05-08 (+19d) | 2027-05-03 → 2027-05-23 (+20d) |  | 61d → 44.45d |
| TAEXCCCL060003 | Cable laying and connected with Panels | 2027-05-04 → 2027-05-23 (+19d) | 2027-05-15 → 2027-06-03 (+19d) |  | 61d → 44.45d |
| TAEXCCCL060004 | Pole Installation with IP Outdoor CCTV POE Camera | 2027-05-16 → 2027-06-03 (+18d) | 2027-06-01 → 2027-06-21 (+20d) |  | 61d → 44.45d |
| 16 | **Potable Networks** | 2026-10-07 → 2026-07-18 (-81d) | 2027-06-08 → 2027-03-25 (-75d) |  |  |
| TAEXPTCL060001 | Excavation works for Trench | 2026-10-07 → 2026-07-18 A (-81d) | 2026-10-15 → 2026-10-21 (+6d) | 0% → 97% | 1d → 68.36d |
| TAEXPTCL060003 | Install Pipes & Fittings | 2027-03-10 → 2026-08-08 A (-214d) | 2027-03-18 → 2027-01-07 (-70d) | 0% → 90% | 19d → 89.58d |
| TAEXPTCL060002 | Bedding Works | 2026-10-17 → 2026-08-08 A (-70d) | 2026-10-18 → 2026-11-03 (+16d) | 0% → 90% | 70d → 91.2d |
| TAEXPTCL060007 | Valve Chamber works | 2027-05-17 → 2026-09-05 A (-254d) | 2027-06-03 → 2027-03-21 (-74d) | 0% → 20% | 1d → 68.36d |
| TAEXPTCL060004 | Backfilling Works for Trench | 2027-03-20 → 2026-09-06 A (-195d) | 2027-04-05 → 2027-01-16 (-79d) | 0% → 50% | 41d → 139.41d |
| TAEXPTCL060005 | Install Valves with fittings | 2027-04-26 → 2026-09-27 A (-211d) | 2027-04-29 → 2027-02-04 (-84d) | 0% → 20% | 20d → 122.9d |
| TAEXPTCL060006 | Install fire hydrent | 2027-04-19 → 2027-02-02 (-76d) | 2027-04-25 → 2027-02-09 (-75d) |  | 19d → 89.58d |
| TAEXPTCL060008 | Inspection Test | 2027-06-05 → 2027-03-21 (-76d) | 2027-06-08 → 2027-03-25 (-75d) |  | 49d → 113.16d |
| 3 | **TSE Networks** | 2026-08-11 → 2026-07-25 (-17d) | 2027-06-13 → 2027-05-12 (-32d) |  |  |
| TAEXTSCL060001 | Excavation works for Trench | 2026-08-11 → 2026-07-25 A (-17d) | 2026-08-19 → 2026-11-02 (+75d) | 0% → 69% | 54d → 62.54d |
| TAEXTSCL060003 | Install Pipes & Fittings | 2027-04-07 → 2026-08-15 A (-235d) | 2027-04-15 → 2027-04-17 (+2d) | 0% → 69% | 54d → 67.78d |
| TAEXTSCL060002 | Bedding Works | 2026-08-20 → 2026-08-15 A (-5d) | 2026-08-22 → 2026-11-03 (+73d) | 0% → 69% | 117d → 91.2d |
| TAEXTSCL060004 | Backfilling Works for Trench | 2027-04-17 → 2026-08-30 A (-230d) | 2027-05-03 → 2027-04-22 (-11d) | 0% → 69% | 54d → 67.78d |
| TAEXTSCL060007 | Inspection Test | 2027-06-09 → 2026-08-30 A (-283d) | 2027-06-13 → 2027-05-12 (-32d) | 0% → 69% | 52d → 79.67d |
| TAEXTSCL060006 | Valve Chamber works | 2027-05-04 → 2026-09-05 A (-241d) | 2027-05-22 → 2027-05-11 (-11d) | 0% → 10% | 67d → 79.67d |
| TAEXTSCL060005 | Install Valves with fittings | 2027-04-29 → 2026-09-27 A (-214d) | 2027-05-03 → 2027-04-24 (-9d) | 0% → 10% | 54d → 66.66d |
| 14 | **Sewerage Networks** |  | 2027-03-11 → 2027-02-28 (-11d) |  |  |
| TAEXSWCL060006 | Leakage Test | 2027-03-09 → 2026-07-16 A (-236d) | 2027-03-11 → 2027-02-28 (-11d) | 0% → 25% | 120d → 130.96d |
| TAEXSWCL0600011 | Excavation works for Trench Part 01 | 2027-01-28 → 2026-09-10 A (-140d) | 2027-02-08 → 2026-09-13 A (-148d) | 0% → 100% | 2d → none |
| TAEXSWCL0600021 | Bedding Works Part 01 | 2027-02-09 → 2026-09-29 A (-133d) | 2027-02-10 → 2026-10-17 (-116d) | 0% → 50% | 122d → 225.9d |
| TAEXSWCL0600031 | Install GRP Pipes & Fittings Part 01 | 2027-02-11 → 2026-10-01 A (-133d) | 2027-02-16 → 2026-10-19 (-120d) | 0% → 45% | 122d → 225.9d |
| TAEXSWCL0600041 | Backfilling Works for Trench Part 01 | 2027-02-23 → 2026-10-25 (-121d) | 2027-03-06 → 2026-11-05 (-121d) |  | 122d → 225.9d |
| TAEXSWCL0600051 | Manhole Installation with backfilling Part 01 | 2027-02-24 → 2026-11-22 (-94d) | 2027-03-06 → 2026-12-02 (-94d) |  | 122d → 203.1d |
| 4 | **Storm Networks** | 2026-07-15 → 2026-07-18 (+3d) | 2027-03-08 → 2027-02-24 (-12d) |  |  |
| TAEXSTCL060001 | Excavation works for Trench | 2026-07-15 → 2026-07-18 A (+3d) | 2026-08-08 → 2026-10-11 (+64d) | 0% → 94% | 43d → 12.98d |
| TAEXSTCL060002 | Bedding Works | 2026-10-19 → 2026-07-25 A (-86d) | 2026-10-21 → 2026-11-04 (+14d) | 0% → 80% | 70d → 91.2d |
| TAEXSTCL060003 | Install GRP Pipes & Fittings | 2026-10-22 → 2026-07-26 A (-88d) | 2026-11-02 → 2026-11-07 (+5d) | 0% → 75% | 70d → 91.2d |
| TAEXSTCL060005 | Manhole Installation with backfilling | 2026-11-16 → 2026-07-28 A (-111d) | 2026-12-01 → 2026-12-06 (+5d) | 0% → 60% | 70d → 91.2d |
| TAEXSTCL060004 | Backfilling Works for Trench | 2026-11-03 → 2026-08-11 A (-84d) | 2026-11-19 → 2026-11-24 (+5d) | 0% → 20% | 70d → 91.2d |
| TAEXSTCL060006 | Install Catch Basin with UPVC Pipes & Fittings | 2027-02-20 → 2027-02-07 (-13d) | 2027-03-04 → 2027-02-21 (-11d) |  | 2d → 37.21d |
| TAEXSTCL060007 | Leakage Test | 2027-03-06 → 2027-02-21 (-13d) | 2027-03-08 → 2027-02-24 (-12d) |  | 2d → 37.21d |
| 2 | **Local Road 07** |  | 2027-08-01 → 2027-08-17 (+16d) |  |  |
| 12 | **Road Works** |  | 2027-08-01 → 2027-07-29 (-3d) |  |  |
| TAEXRDCL070004 | ABC aggregate Base Course Works | 2027-04-11 → 2027-03-29 (-13d) | 2027-04-13 → 2027-04-01 (-12d) |  | 1d → 31.19d |
| TAEXRDCL070005 | MBC1 layer | 2027-04-14 → 2027-04-01 (-13d) | 2027-04-14 → 2027-04-03 (-11d) |  | 1d → 31.19d |
| TAEXRDCL070006 | BBC Base Course | 2027-04-15 → 2027-04-03 (-12d) | 2027-04-17 → 2027-04-05 (-12d) |  | 1d → 31.19d |
| TAEXRDCL070008 | Precast Concret Kerps | 2027-05-23 → 2027-05-19 (-4d) | 2027-06-12 → 2027-06-09 (-3d) |  | 0d → 2.35d |
| TAEXRDCL070007 | BWC Asphalt Wearing Course with RC | 2027-06-13 → 2027-06-09 (-4d) | 2027-06-13 → 2027-06-10 (-3d) |  | 1d → 3.35d |
| TAEXRDCL070009 | Precast Interlock Works | 2027-06-23 → 2027-06-20 (-3d) | 2027-07-11 → 2027-07-08 (-3d) |  | 1d → 3.35d |
| TAEXRDCL070010 | Stone Paving works | 2027-07-12 → 2027-07-08 (-4d) | 2027-07-28 → 2027-07-26 (-2d) |  | 1d → 3.35d |
| TAEXRDCL070011 | Road Marking | 2027-07-29 → 2027-07-26 (-3d) | 2027-07-29 → 2027-07-27 (-2d) |  | 1d → 3.35d |
| TAEXRDCL070012 | Traffic Sinage | 2027-07-31 → 2027-07-27 (-4d) | 2027-08-01 → 2027-07-29 (-3d) |  | 1d → 3.35d |
| 1 | **Electrical Works** | 2027-04-10 → 2027-05-24 (+44d) | 2027-07-03 → 2027-08-17 (+45d) |  |  |
| TAEXELCL070001 | Trench Cut off | 2027-04-10 → 2027-05-24 (+44d) | 2027-04-22 → 2027-06-07 (+46d) |  | 0d → -24.67d |

| ID | Task | Start | Finish | Complete | Total float | Other |
| --- | --- | --- | --- | --- | --- | --- |
| TAEXELCL070002 | Drawpit and PVC Pipes Installation | 2027-04-24 → 2027-06-07 (+44d) | 2027-05-02 → 2027-06-16 (+45d) |  | 56d → 17.48d |  |
| TAEXELCL070003 | Road Crossing Ducts | 2027-05-03 → 2027-06-16 (+44d) | 2027-05-04 → 2027-06-19 (+46d) |  | 56d → 17.48d |  |
| TAEXELCL070006 | Poles RC Foundation | 2027-05-03 → 2027-06-16 (+44d) | 2027-05-05 → 2027-06-20 (+46d) |  | 68d → 29.48d |  |
| TAEXELCL070004 | Trench Backfilling | 2027-05-05 → 2027-06-19 (+45d) | 2027-05-16 → 2027-06-30 (+45d) |  | 56d → 17.48d |  |
| TAEXELCL070008 | Lighting Pole Installation with Luminares | 2027-05-06 → 2027-06-20 (+45d) | 2027-05-11 → 2027-06-26 (+46d) |  | 70d → 31.48d |  |
| TAEXELCL070005 | Cables Pulling | 2027-05-17 → 2027-06-30 (+44d) | 2027-05-19 → 2027-07-04 (+46d) |  | 56d → 17.48d |  |
| TAEXELCL070007 | Earthing cables | 2027-07-01 → 2027-08-15 (+45d) | 2027-07-03 → 2027-08-17 (+45d) |  | 20d → -18.52d |  |
| 2 | **Telecommunication Works** | 2027-03-21 → 2027-05-18 (+58d) | 2027-06-13 → 2027-06-23 (+10d) |  |  |  |
| TAEXTCCL070001 | Trench Cut off | 2027-03-21 → 2027-05-18 (+58d) | 2027-03-27 → 2027-05-25 (+59d) |  | 45d → -5.61d |  |
| TAEXTCCL070002 | Drawpit and PVC Pipes Installation | 2027-05-26 → 2027-06-05 (+10d) | 2027-05-30 → 2027-06-09 (+10d) |  | 0d → -8.27d |  |
| TAEXTCCL070003 | Road Crossing Ducts | 2027-05-31 → 2027-06-09 (+9d) | 2027-06-01 → 2027-06-12 (+11d) |  | 41d → 32.73d |  |
| TAEXTCCL070004 | Trench Backfilling | 2027-06-02 → 2027-06-12 (+10d) | 2027-06-13 → 2027-06-23 (+10d) |  | 41d → 32.73d |  |
| 18 | **CCTV Works** | 2027-04-19 → 2027-05-08 (+19d) | 2027-06-08 → 2027-06-28 (+20d) |  |  |  |
| TAEXCCCL070001 | Pipe Installation with manhole | 2027-04-19 → 2027-05-08 (+19d) | 2027-04-28 → 2027-05-18 (+20d) |  | 0d → -2.55d |  |
| TAEXCCCL070002 | CCTV Swiches Lighting panels Installation | 2027-04-29 → 2027-05-18 (+19d) | 2027-05-12 → 2027-06-01 (+20d) |  | 55d → 38.45d |  |
| TAEXCCCL070003 | Cable laying and connected with Panels | 2027-05-13 → 2027-06-01 (+19d) | 2027-05-24 → 2027-06-13 (+20d) |  | 55d → 38.45d |  |
| TAEXCCCL070004 | Pole Installation with IP Outdoor CCTV POE Camera | 2027-05-25 → 2027-06-13 (+19d) | 2027-06-08 → 2027-06-28 (+20d) |  | 55d → 38.45d |  |
| 3 | **Potable Networks** |  | 2027-06-24 → 2027-04-11 (-74d) |  |  |  |
| TAEXPTCL070002 | Bedding Works | 2026-09-26 → 2026-06-29 A (-89d) | 2026-09-27 → 2026-10-11 (+14d) | 0% → 44% | 147d → 165.2d |  |
| TAEXPTCL070003 | Install Pipes & Fittings | 2027-03-20 → 2026-06-30 A (-263d) | 2027-03-28 → 2027-01-12 (-75d) | 0% → 44% | 19d → 89.58d |  |
| TAEXPTCL070004 | Backfilling Works for Trench | 2027-03-29 → 2026-08-30 A (-211d) | 2027-04-12 → 2027-01-21 (-81d) | 0% → 44% | 20d → 122.9d |  |
| TAEXPTCL070005 | Install Valves with fittings | 2027-04-08 → 2026-09-27 A (-193d) | 2027-04-12 → 2027-01-21 (-81d) | 0% → 15% | 20d → 122.9d |  |
| TAEXPTCL0700011 | Excavation works for Trench Part 01 | 2026-09-21 → 2026-10-05 (+14d) | 2026-09-24 → 2026-10-10 (+16d) |  | 1d → 8.56d |  |
| TAEXPTCL070006 | Install fire hydrent | 2027-03-29 → 2027-01-12 (-76d) | 2027-04-03 → 2027-01-18 (-75d) |  | 19d → 89.58d |  |
| TAEXPTCL070007 | Valve Chamber works | 2027-06-05 → 2027-03-21 (-76d) | 2027-06-20 → 2027-04-06 (-75d) |  | 1d → 68.36d |  |
| TAEXPTCL070008 | Inspection Test | 2027-06-21 → 2027-04-06 (-76d) | 2027-06-24 → 2027-04-11 (-74d) |  | 35d → 99.16d |  |
| 4 | **TSE Networks** |  | 2027-06-02 → 2027-05-19 (-14d) |  |  |  |
| TAEXTSCL070005 | Install Valves with fittings | 2027-05-08 → 2026-09-27 A (-223d) | 2027-05-11 → 2027-04-29 (-12d) | 0% → 15% | 54d → 66.66d |  |
| TAEXTSCL070006 | Valve Chamber works | 2027-05-12 → 2026-09-27 A (-227d) | 2027-05-29 → 2027-05-15 (-14d) | 0% → 15% | 54d → 66.66d |  |
| TAEXTSCL0700011 | Excavation works for Trench Part 01 | 2026-06-21 → 2026-10-08 (+109d) | 2026-06-24 → 2026-10-13 (+111d) |  | 54d → 10.44d |  |
| TAEXTSCL0700021 | Bedding Works Part 01 | 2027-01-17 → 2026-10-15 (-94d) | 2027-01-17 → 2026-10-17 (-92d) |  | 52d → 174.9d |  |
| TAEXTSCL0700031 | Install Pipes & Fittings Part 01 | 2027-01-18 → 2026-10-17 (-93d) | 2027-01-23 → 2026-10-22 (-93d) |  | 52d → 174.9d |  |
| TAEXTSCL0700041 | Backfilling Works for Trench Part 01 | 2027-01-24 → 2026-10-22 (-94d) | 2027-02-01 → 2026-11-01 (-92d) |  | 67d → 185.62d |  |
| TAEXTSCL070007 | Inspection Test | 2027-05-30 → 2027-05-15 (-15d) | 2027-06-02 → 2027-05-19 (-14d) |  | 54d → 66.66d |  |
| 15 | **Sewerage Networks** | 2026-12-15 → 2026-06-09 (-189d) | 2027-03-02 → 2026-11-29 (-93d) |  |  |  |
| TAEXSWCL070001 | Excavation works for Trench | 2026-12-15 → 2026-06-09 A (-189d) | 2027-01-16 → 2026-10-15 (-93d) | 0% → 95% | 2d → 131.03d |  |
| TAEXSWCL070002 | Bedding Works | 2027-01-17 → 2026-08-29 A (-141d) | 2027-01-19 → 2026-10-15 (-96d) | 0% → 95% | 128d → 218.35d |  |
| TAEXSWCL070003 | Install GRP Pipes & Fittings | 2027-01-20 → 2026-08-30 A (-143d) | 2027-01-28 → 2026-10-15 (-105d) | 0% → 95% | 128d → 218.35d |  |
| TAEXSWCL070005 | Manhole Installation with backfilling | 2027-02-14 → 2026-09-10 A (-157d) | 2027-02-27 → 2026-11-25 (-94d) | 0% → 75% | 128d → 208.35d |  |
| TAEXSWCL070004 | Backfilling Works for Trench | 2027-01-31 → 2026-10-17 (-106d) | 2027-02-15 → 2026-11-02 (-105d) |  | 128d → 218.35d |  |
| TAEXSWCL070006 | Leakage Test | 2027-02-28 → 2026-11-25 (-95d) | 2027-03-02 → 2026-11-29 (-93d) |  | 128d → 208.35d |  |
| 5 | **Storm Networks** |  | 2027-02-22 → 2027-02-10 (-12d) |  |  |  |
| TAEXSTCL0700011 | Excavation works for Trench Part 01 | 2026-08-15 → 2026-10-11 (+57d) | 2026-08-18 → 2026-10-15 (+58d) |  | 52d → 12.98d |  |
| TAEXSTCL0700021 | Bedding Works Part 01 | 2026-08-19 → 2026-10-15 (+57d) | 2026-08-19 → 2026-10-17 (+59d) |  | 118d → 88.97d |  |
| TAEXSTCL0700031 | Install GRP Pipes & Fittings Part 01 | 2026-08-20 → 2026-10-17 (+58d) | 2026-08-25 → 2026-10-22 (+58d) |  | 118d → 88.97d |  |
| TAEXSTCL0700041 | Backfilling Works for Trench Part 01 | 2026-09-03 → 2026-10-31 (+58d) | 2026-09-12 → 2026-11-09 (+58d) |  | 118d → 88.97d |  |
| TAEXSTCL0700051 | Manhole Installation with backfilling Part 01 | 2026-10-20 → 2026-11-28 (+39d) | 2026-10-25 → 2026-12-03 (+39d) |  | 91d → 77.44d |  |
| TAEXSTCL070006 | Install Catch Basin with UPVC Pipes & Fittings | 2027-02-08 → 2027-01-26 (-13d) | 2027-02-18 → 2027-02-07 (-11d) |  | 1d → 31.19d |  |
| TAEXSTCL070007 | Leakage Test | 2027-02-20 → 2027-02-07 (-13d) | 2027-02-22 → 2027-02-10 (-12d) |  | 1d → 31.19d |  |
| 6 | **Local Road 08** |  | 2027-07-31 → 2027-08-19 (+19d) |  |  |  |
| 12 | **Road Works** |  | 2027-07-31 → 2027-07-28 (-3d) |  |  |  |
| TAEXRDCL080000 | Asphalt Milling and Deisposal | 2027-03-14 → 2026-07-25 A (-232d) | 2027-03-17 → 2026-07-26 A (-234d) | 0% → 100% | 2d → none | resources COST [99400]; DUMP TRUCK [64 h]; DUMP TRUCK DRIVER [64 h]; MILLING MACHINE [64 h]; MILLING MACHINE OPERATOR [64 h] → DUMP TRUCK [64 h]; MILLING MACHINE [64 h]; DUMP TRUCK DRIVER [64 h]; MILLING MACHINE OPERATOR [64 h]; COST [99400] |
| TAEXRDCL0800011 | Road Excavation and Disposal Part 01 | 2027-03-18 → 2027-02-24 (-22d) | 2027-03-23 → 2027-03-02 (-21d) |  | 2d → 40.19d |  |
| TAEXRDCL0800021 | Backfilling Works for Road Part 01 | 2027-03-24 → 2027-03-02 (-22d) | 2027-03-31 → 2027-03-10 (-21d) |  | 2d → 40.19d |  |
| TAEXRDCL0800031 | Subgrade Works Part 01 | 2027-04-01 → 2027-03-10 (-22d) | 2027-04-05 → 2027-03-15 (-21d) |  | 2d → 40.19d |  |
| TAEXRDCL080004 | ABC aggregate Base Course Works | 2027-04-06 → 2027-03-15 (-22d) | 2027-04-10 → 2027-03-20 (-21d) |  | 2d → 40.19d |  |
| TAEXRDCL080005 | MBC1 layer | 2027-04-11 → 2027-03-20 (-22d) | 2027-04-11 → 2027-03-21 (-21d) |  | 2d → 40.19d |  |
| TAEXRDCL080006 | BBC Base Course | 2027-04-12 → 2027-03-21 (-22d) | 2027-04-15 → 2027-03-25 (-21d) |  | 2d → 40.19d |  |
| TAEXRDCL080008 | Precast Concret Kerps | 2027-06-13 → 2027-06-09 (-4d) | 2027-06-28 → 2027-06-26 (-2d) |  | 0d → 2.35d |  |
| TAEXRDCL080007 | BWC Asphalt Wearing Course with RC | 2027-06-29 → 2027-06-26 (-3d) | 2027-06-29 → 2027-06-27 (-2d) |  | 2d → 4.35d |  |
| TAEXRDCL080009 | Precast Interlock Works | 2027-06-30 → 2027-06-27 (-3d) | 2027-07-19 → 2027-07-17 (-2d) |  | 2d → 4.35d |  |
| TAEXRDCL080010 | Stone Paving works | 2027-07-20 → 2027-07-17 (-3d) | 2027-07-27 → 2027-07-25 (-2d) |  | 2d → 4.35d |  |
| TAEXRDCL080011 | Road Marking | 2027-07-28 → 2027-07-25 (-3d) | 2027-07-28 → 2027-07-26 (-2d) |  | 2d → 4.35d |  |
| TAEXRDCL080012 | Traffic Sinage | 2027-07-29 → 2027-07-26 (-3d) | 2027-07-31 → 2027-07-28 (-3d) |  | 2d → 4.35d |  |
| 1 | **Electrical Works** | 2027-04-24 → 2026-09-01 (-235d) | 2027-07-05 → 2027-08-19 (+45d) |  |  |  |
| TAEXELCL080009 | Install Substation & RMU | 2027-06-02 → 2026-09-01 A (-274d) | 2027-06-12 → 2026-09-02 A (-283d) | 0% → 100% | 50d → none |  |
| TAEXELCL080001 | Trench Cut off | 2027-04-24 → 2027-06-07 (+44d) | 2027-05-04 → 2027-06-19 (+46d) |  | 0d → -24.67d |  |
| TAEXELCL080002 | Drawpit and PVC Pipes Installation | 2027-05-05 → 2027-06-19 (+45d) | 2027-05-10 → 2027-06-24 (+45d) |  | 47d → 8.48d |  |
| TAEXELCL080003 | Road Crossing Ducts | 2027-05-11 → 2027-06-24 (+44d) | 2027-05-12 → 2027-06-27 (+46d) |  | 47d → 8.48d |  |
| TAEXELCL080006 | Poles RC Foundation | 2027-05-11 → 2027-06-24 (+44d) | 2027-05-15 → 2027-06-29 (+45d) |  | 61d → 22.48d |  |

| ID | Task | Start | Finish | Complete | Total float |
| --- | --- | --- | --- | --- | --- |
| TAEXELCL080004 | Trench Backfilling | 2027-05-13 → 2027-06-27 (+45d) | 2027-05-29 → 2027-07-13 (+45d) |  | 47d → 8.48d |
| TAEXELCL080008 | Lighting Pole Installation with Luminares | 2027-05-16 → 2027-06-29 (+44d) | 2027-05-22 → 2027-07-06 (+45d) |  | 61d → 22.48d |
| TAEXELCL080005 | Cables Pulling | 2027-05-30 → 2027-07-13 (+44d) | 2027-06-01 → 2027-07-17 (+46d) |  | 47d → 8.48d |
| TAEXELCL080007 | Earthing cables | 2027-07-04 → 2027-08-17 (+44d) | 2027-07-05 → 2027-08-19 (+45d) |  | 20d → -18.52d |
| 2 | **Telecommunication Works** | 2027-03-28 → 2027-05-25 (+58d) | 2027-06-23 → 2027-07-04 (+11d) |  |  |
| TAEXTCCL080001 | Trench Cut off | 2027-03-28 → 2027-05-25 (+58d) | 2027-04-07 → 2027-06-06 (+60d) |  | 45d → -5.61d |
| TAEXTCCL080002 | Drawpit and PVC Pipes Installation | 2027-05-31 → 2027-06-09 (+9d) | 2027-06-05 → 2027-06-15 (+10d) |  | 0d → -8.27d |
| TAEXTCCL080003 | Road Crossing Ducts | 2027-06-06 → 2027-06-15 (+9d) | 2027-06-07 → 2027-06-17 (+10d) |  | 32d → 23.73d |
| TAEXTCCL080004 | Trench Backfilling | 2027-06-08 → 2027-06-17 (+9d) | 2027-06-23 → 2027-07-04 (+11d) |  | 32d → 23.73d |
| 19 | **CCTV Works** | 2027-04-29 → 2027-05-18 (+19d) | 2027-06-21 → 2027-07-11 (+20d) |  |  |
| TAEXCCCL080001 | Pipe Installation with manhole | 2027-04-29 → 2027-05-18 (+19d) | 2027-05-08 → 2027-05-27 (+19d) |  | 0d → -2.55d |
| TAEXCCCL080002 | CCTV Swiches Lighting panels Installation | 2027-05-09 → 2027-05-27 (+18d) | 2027-05-23 → 2027-06-12 (+20d) |  | 44d → 27.45d |
| TAEXCCCL080003 | Cable laying and connected with Panels | 2027-05-24 → 2027-06-12 (+19d) | 2027-06-03 → 2027-06-23 (+20d) |  | 44d → 27.45d |
| TAEXCCCL080004 | Pole Installation with IP Outdoor CCTV POE Camera | 2027-06-05 → 2027-06-23 (+18d) | 2027-06-21 → 2027-07-11 (+20d) |  | 44d → 27.45d |
| 3 | **Potable Networks** | 2026-10-17 → 2026-08-23 (-55d) | 2027-07-13 → 2027-04-26 (-78d) |  |  |
| TAEXPTCL080001 | Excavation works for Trench | 2026-10-17 → 2026-08-23 A (-55d) |  | 0% → 64% | 1d → 68.36d |
| TAEXPTCL080003 | Install Pipes & Fittings | 2027-03-29 → 2026-09-26 A (-184d) | 2027-04-06 → 2027-01-17 (-79d) | 0% → 55% | 29d → 127.83d |
| TAEXPTCL080002 | Bedding Works | 2026-10-26 → 2026-09-26 A (-30d) | 2026-10-27 → 2026-10-26 (-1d) | 0% → 55% | 125d → 169.38d |
| TAEXPTCL080006 | Install fire hydrent | 2027-04-26 → 2026-09-27 A (-211d) | 2027-05-02 → 2027-02-15 (-76d) | 0% → 15% | 28d → 111.28d |
| TAEXPTCL080007 | Valve Chamber works | 2027-06-21 → 2026-09-27 A (-267d) | 2027-07-08 → 2027-04-21 (-78d) | 0% → 20% | 1d → 68.36d |
| TAEXPTCL080004 | Backfilling Works for Trench | 2027-04-07 → 2027-01-17 (-80d) | 2027-04-24 → 2027-02-03 (-80d) |  | 29d → 127.83d |
| TAEXPTCL080005 | Install Valves with fittings | 2027-05-01 → 2027-02-04 (-86d) | 2027-05-04 → 2027-02-09 (-84d) |  | 20d → 122.9d |
| TAEXPTCL080008 | Inspection Test | 2027-07-10 → 2027-04-21 (-80d) | 2027-07-13 → 2027-04-26 (-78d) |  | 15d → 82.36d |
| 4 | **TSE Networks** | 2026-08-20 → 2026-08-04 (-16d) | 2027-07-18 → 2027-05-01 (-78d) |  |  |
| TAEXTSCL080001 | Excavation works for Trench | 2026-08-20 → 2026-08-04 A (-16d) | 2026-08-29 → 2026-11-07 (+70d) | 0% → 49% | 54d → 62.54d |
| TAEXTSCL080005 | Install Valves with fittings | 2027-02-15 → 2026-09-27 A (-141d) | 2027-02-18 → 2026-12-06 (-74d) | 0% → 15% | 118d → 189.44d |
| TAEXTSCL080006 | Valve Chamber works | 2027-02-20 → 2026-09-27 A (-146d) | 2027-03-09 → 2026-12-22 (-77d) | 0% → 15% | 123d → 189.44d |
| TAEXTSCL080002 | Bedding Works | 2026-10-28 → 2026-11-07 (+10d) | 2026-10-29 → 2026-11-09 (+11d) |  | 125d → 159.04d |
| TAEXTSCL080003 | Install Pipes & Fittings | 2027-01-24 → 2026-11-09 (-76d) | 2027-02-01 → 2026-11-18 (-75d) |  | 52d → 159.04d |
| TAEXTSCL080004 | Backfilling Works for Trench | 2027-02-02 → 2026-11-18 (-76d) | 2027-02-18 → 2026-12-06 (-74d) |  | 118d → 189.44d |
| TAEXTSCL080007 | Inspection Test | 2027-07-14 → 2027-04-26 (-79d) | 2027-07-18 → 2027-05-01 (-78d) |  | 15d → 82.36d |
| 16 | **Sewerage Networks** |  | 2027-03-07 → 2026-11-25 (-102d) |  |  |
| TAEXSWCL0800041 | Backfilling Works for Trench Part 01 | 2027-02-09 → 2026-06-06 A (-248d) | 2027-02-20 → 2026-10-04 A (-139d) | 0% → 100% | 124d → none |
| TAEXSWCL0800011 | Excavation works for Trench Part 01 | 2027-01-17 → 2026-06-08 A (-223d) | 2027-01-27 → 2026-06-21 A (-220d) | 0% → 100% | 2d → none |
| TAEXSWCL0800021 | Bedding Works Part 01 | 2027-01-28 → 2026-07-02 A (-210d) | 2027-01-28 → 2026-09-06 A (-144d) | 0% → 100% | 124d → none |
| TAEXSWCL0800031 | Install GRP Pipes & Fittings Part 01 | 2027-01-30 → 2026-07-02 A (-212d) | 2027-02-02 → 2026-09-13 A (-142d) | 0% → 100% | 124d → none |
| TAEXSWCL080006 | Leakage Test | 2027-03-04 → 2026-07-18 A (-229d) | 2027-03-07 → 2026-11-25 (-102d) | 0% → 10% | 124d → 211.15d |
| TAEXSWCL0800051 | Manhole Installation with backfilling Part 01 | 2027-02-21 → 2026-07-28 A (-208d) | 2027-03-03 → 2026-11-23 (-100d) | 0% → 95% | 124d → 211.15d |
| 5 | **Storm Networks** |  | 2027-01-16 → 2027-01-13 (-3d) |  |  |
| TAEXSTCL0800051 | Manhole Installation with backfilling Part 01 | 2026-10-20 → 2026-06-06 A (-136d) | 2026-10-31 → 2026-11-30 (+30d) | 0% → 85% | 27d → 6.85d |
| TAEXSTCL080007 | Leakage Test | 2027-01-13 → 2026-07-12 A (-185d) | 2027-01-16 → 2027-01-13 (-3d) | 0% → 15% | 70d → 92.39d |
| TAEXSTCL0800011 | Excavation works for Trench Part 01 | 2026-08-30 → 2026-09-12 A (+13d) | 2026-09-03 → 2026-10-15 (+42d) | 0% → 85% | 43d → 12.98d |
| TAEXSTCL0800021 | Bedding Works Part 01 | 2026-09-05 → 2026-09-12 A (+7d) | 2026-09-05 → 2026-10-15 (+40d) | 0% → 85% | 43d → 12.98d |
| TAEXSTCL0800031 | Install GRP Pipes & Fittings Part 01 | 2026-09-06 → 2026-10-15 (+39d) | 2026-09-13 → 2026-10-24 (+41d) |  | 43d → 12.98d |
| TAEXSTCL0800041 | Backfilling Works for Trench Part 01 | 2026-09-23 → 2026-11-02 (+40d) | 2026-09-30 → 2026-11-10 (+41d) |  | 43d → 12.98d |
| TAEXSTCL080006 | Install Catch Basin with UPVC Pipes & Fittings | 2026-12-02 → 2026-11-30 (-2d) | 2026-12-14 → 2026-12-13 (-1d) |  | 0d → 6.85d |
| 3 | **Local Road 09** |  | 2027-08-02 → 2027-08-22 (+20d) |  |  |
| 12 | **Road Works** |  | 2027-08-02 → 2027-07-31 (-2d) |  |  |
| TAEXRDCL090004 | ABC aggregate Base Course Works |  | 2027-02-24 → 2027-02-25 (+1d) |  | 42d → 61.84d |
| TAEXRDCL090005 | MBC1 layer |  | 2027-02-25 → 2027-02-27 (+2d) |  | 42d → 61.84d |
| TAEXRDCL090006 | BBC Base Course |  | 2027-02-28 → 2027-03-01 (+1d) |  | 42d → 61.84d |
| TAEXRDCL090008 | Precast Concret Kerps | 2027-06-29 → 2027-06-26 (-3d) | 2027-07-13 → 2027-07-11 (-2d) |  | 0d → 2.35d |
| TAEXRDCL090007 | BWC Asphalt Wearing Course with RC | 2027-07-14 → 2027-07-11 (-3d) | 2027-07-14 → 2027-07-12 (-2d) |  | 0d → 2.35d |
| TAEXRDCL090009 | Precast Interlock Works | 2027-07-15 → 2027-07-12 (-3d) | 2027-07-28 → 2027-07-26 (-2d) |  | 0d → 2.35d |
| TAEXRDCL090010 | Stone Paving works | 2027-07-29 → 2027-07-26 (-3d) | 2027-07-31 → 2027-07-28 (-3d) |  | 0d → 2.35d |
| TAEXRDCL090011 | Road Marking | 2027-08-01 → 2027-07-28 (-4d) | 2027-08-01 → 2027-07-29 (-3d) |  | 0d → 2.35d |
| TAEXRDCL090012 | Traffic Sinage | 2027-08-02 → 2027-07-29 (-4d) | 2027-08-02 → 2027-07-31 (-2d) |  | 0d → 2.35d |
| 1 | **Electrical Works** | 2027-05-05 → 2027-06-19 (+45d) | 2027-07-07 → 2027-08-22 (+46d) |  |  |
| TAEXELCL090001 | Trench Cut off | 2027-05-05 → 2027-06-19 (+45d) | 2027-05-17 → 2027-07-01 (+45d) |  | 0d → -24.67d |
| TAEXELCL090002 | Drawpit and PVC Pipes Installation | 2027-05-18 → 2027-07-01 (+44d) | 2027-05-27 → 2027-07-12 (+46d) |  | 39d → 0.48d |
| TAEXELCL090003 | Road Crossing Ducts | 2027-05-29 → 2027-07-12 (+44d) | 2027-05-30 → 2027-07-14 (+45d) |  | 39d → 0.48d |
| TAEXELCL090006 | Poles RC Foundation | 2027-05-29 → 2027-07-12 (+44d) | 2027-05-31 → 2027-07-15 (+45d) |  | 49d → 10.48d |
| TAEXELCL090004 | Trench Backfilling | 2027-05-31 → 2027-07-14 (+44d) | 2027-06-10 → 2027-07-26 (+46d) |  | 39d → 0.48d |
| TAEXELCL090008 | Lighting Pole Installation with Luminares | 2027-06-01 → 2027-07-15 (+44d) | 2027-06-05 → 2027-07-20 (+45d) |  | 49d → 10.48d |
| TAEXELCL090005 | Cables Pulling | 2027-06-12 → 2027-07-26 (+44d) | 2027-06-13 → 2027-07-28 (+45d) |  | 39d → 0.48d |
| TAEXELCL090007 | Earthing cables | 2027-07-06 → 2027-08-19 (+44d) | 2027-07-07 → 2027-08-22 (+46d) |  | 20d → -18.52d |
| 2 | **Telecommunication Works** | 2027-04-08 → 2027-06-06 (+59d) | 2027-06-23 → 2027-07-04 (+11d) |  |  |
| TAEXTCCL090001 | Trench Cut off | 2027-04-08 → 2027-06-06 (+59d) | 2027-04-13 → 2027-06-12 (+60d) |  | 45d → -5.61d |
| TAEXTCCL090002 | Drawpit and PVC Pipes Installation | 2027-06-06 → 2027-06-15 (+9d) | 2027-06-09 → 2027-06-20 (+11d) |  | 0d → -8.27d |
| TAEXTCCL090003 | Road Crossing Ducts | 2027-06-10 → 2027-06-20 (+10d) | 2027-06-12 → 2027-06-22 (+10d) |  | 32d → 23.73d |

| ID | Task | Start | Finish | Complete | Total float | Predecessors |
| --- | --- | --- | --- | --- | --- | --- |
| TAEXTCCL090004 | Trench Backfilling | 2027-06-13 → 2027-06-22 (+9d) | 2027-06-23 → 2027-07-04 (+11d) |  | 32d → 23.73d |  |
| 20 | **CCTV Works** | 2027-05-09 → 2027-05-27 (+18d) | 2027-06-20 → 2027-07-10 (+20d) |  |  |  |
| TAEXCCCL090001 | Pipe Installation with manhole | 2027-05-09 → 2027-05-27 (+18d) | 2027-05-16 → 2027-06-05 (+20d) |  | 0d → -2.55d |  |
| TAEXCCCL090002 | CCTV Swiches Lighting panels Installation | 2027-05-17 → 2027-06-05 (+19d) | 2027-05-27 → 2027-06-16 (+20d) |  | 45d → 28.45d |  |
| TAEXCCCL090003 | Cable laying and connected with Panels | 2027-05-29 → 2027-06-16 (+18d) | 2027-06-06 → 2027-06-26 (+20d) |  | 45d → 28.45d |  |
| TAEXCCCL090004 | Pole Installation with IP Outdoor CCTV POE Camera | 2027-06-07 → 2027-06-26 (+19d) | 2027-06-20 → 2027-07-10 (+20d) |  | 45d → 28.45d |  |
| 3 | **Potable Networks** |  | 2027-07-28 → 2027-05-11 (-78d) |  |  |  |
| TAEXPTCL0900021 | Bedding Works Part 01 | 2026-09-21 → 2026-06-06 A (-107d) | 2026-09-27 → 2026-08-09 A (-49d) | 0% → 100% | 155d → none |  |
| TAEXPTCL0900031 | Install Pipes & Fittings Part 01 | 2026-09-28 → 2026-06-11 A (-109d) | 2026-10-04 → 2026-08-09 A (-56d) | 0% → 100% | 155d → none |  |
| TAEXPTCL0900041 | Backfilling Works for Trench Part 01 | 2027-02-23 → 2026-06-15 A (-253d) | 2027-03-06 → 2026-08-09 A (-209d) | 0% → 100% | 52d → none |  |
| TAEXPTCL0900011 | Excavation works for Trench Part 01 | 2026-09-17 → 2026-08-06 A (-42d) | 2026-09-20 → 2026-08-09 A (-42d) | 0% → 100% | 1d → none |  |
| TAEXPTCL090005 | Install Valves with fittings | 2027-04-13 → 2026-10-04 A (-191d) | 2027-04-15 → 2027-01-24 (-81d) | 0% → 25% | 20d → 122.9d |  |
| TAEXPTCL090006 | Install fire hydrent | 2027-04-04 → 2027-01-18 (-76d) | 2027-04-10 → 2027-01-25 (-75d) |  | 19d → 89.58d |  |
| TAEXPTCL090007 | Valve Chamber works | 2027-07-10 → 2027-04-21 (-80d) | 2027-07-25 → 2027-05-08 (-78d) |  | 1d → 68.36d |  |
| TAEXPTCL090008 | Inspection Test | 2027-07-26 → 2027-05-08 (-79d) | 2027-07-28 → 2027-05-11 (-78d) |  | 6d → 73.36d |  |
| 4 | **TSE Networks** |  | 2027-05-26 → 2027-05-16 (-10d) |  |  |  |
| TAEXTSCL090005 | Install Valves with fittings | 2027-05-04 → 2026-10-04 A (-212d) | 2027-05-06 → 2027-04-26 (-10d) | 0% → 50% | 54d → 66.66d |  |
| TAEXTSCL0900011 | Excavation works for Trench Part 01 | 2026-06-25 → 2026-10-13 (+110d) | 2026-07-08 → 2026-10-27 (+111d) |  | 54d → 10.44d |  |
| TAEXTSCL090002 | Bedding Works | 2026-07-09 → 2026-10-27 (+110d) | 2026-07-11 → 2026-10-29 (+110d) |  | 100d → 43.09d |  |
| TAEXTSCL090003 | Install Pipes & Fittings | 2027-02-02 → 2026-11-18 (-76d) | 2027-02-08 → 2026-11-25 (-75d) |  | 52d → 159.04d |  |
| TAEXTSCL090004 | Backfilling Works for Trench | 2027-02-09 → 2026-11-25 (-76d) | 2027-02-22 → 2026-12-09 (-75d) |  | 52d → 159.04d |  |
| TAEXTSCL090006 | Valve Chamber works | 2027-05-08 → 2027-04-26 (-12d) | 2027-05-23 → 2027-05-12 (-11d) |  | 60d → 69.81d |  |
| TAEXTSCL090007 | Inspection Test | 2027-05-24 → 2027-05-12 (-12d) | 2027-05-26 → 2027-05-16 (-10d) |  | 60d → 69.81d |  |
| 17 | **Sewerage Networks** |  | 2027-04-12 → 2026-12-01 (-132d) |  |  |  |
| TAEXSWCL090006 | Leakage Test | 2027-04-10 → 2026-07-18 A (-266d) | 2027-04-12 → 2026-12-01 (-132d) | 0% → 50% | 93d → 206.85d |  |
| TAEXSWCL0900041 | Backfilling Works for Trench Part 01 | 2027-03-31 → 2026-10-05 (-177d) | 2027-04-08 → 2026-10-13 (-177d) |  | 93d → 246.5d |  |
| TAEXSWCL0900051 | Manhole Installation with backfilling Part 01 | 2027-04-03 → 2026-11-22 (-132d) | 2027-04-08 → 2026-11-29 (-130d) |  | 93d → 206.85d |  |
| 5 | **Storm Networks** |  | 2026-12-28 → 2026-12-29 (+1d) |  |  |  |
| TAEXSTCL0900021 | Bedding Works Part 01 | 2026-09-06 → 2026-06-04 A (-94d) | 2026-09-06 → 2026-06-06 A (-92d) | 0% → 100% | 52d → none |  |
| TAEXSTCL090003 | Install GRP Pipes & Fittings | 2026-09-07 → 2026-06-04 A (-95d) | 2026-09-15 → 2026-06-06 A (-101d) | 0% → 100% | 52d → none |  |
| TAEXSTCL090005 | Manhole Installation with backfilling | 2026-10-20 → 2026-06-13 A (-129d) | 2026-11-02 → 2026-11-29 (+27d) | 0% → 90% | 36d → 18.15d |  |
| TAEXSTCL090004 | Backfilling Works for Trench | 2026-09-19 → 2026-06-24 A (-87d) | 2026-10-03 → 2026-08-08 A (-56d) | 0% → 100% | 52d → none |  |
| TAEXSTCL090007 | Leakage Test | 2026-12-26 → 2026-08-08 A (-140d) | 2026-12-28 → 2026-12-29 (+1d) | 0% → 80% | 42d → 61.84d |  |
| TAEXSTCL090006 | Install Catch Basin with UPVC Pipes & Fittings | 2026-12-15 → 2026-12-17 (+2d) | 2026-12-24 → 2026-12-28 (+4d) |  | 0d → 2.35d |  |
| 4 | **Upgrade Local 06** | 2027-06-02 → 2027-06-13 (+11d) | 2027-07-20 → 2027-08-31 (+42d) |  |  |  |
| 22 | **Electrical Works** | 2027-06-22 → 2027-07-21 (+29d) | 2027-07-24 → 2027-08-31 (+38d) |  |  |  |
| TAEXELCU060001 | Trench Cut off | 2027-06-10 → 2027-07-21 (+41d) | 2027-06-21 → 2027-08-02 (+42d) |  | 0d → -24.67d |  |
| TAEXELCU060002 | Drawpit and PVC Pipes Installation | 2027-06-22 → 2027-08-02 (+41d) | 2027-06-28 → 2027-08-09 (+42d) |  | 11d → -24.62d |  |
| TAEXELCU060003 | Road Crossing Ducts | 2027-06-29 → 2027-08-09 (+41d) | 2027-07-01 → 2027-08-12 (+42d) |  | 11d → -24.62d |  |
| TAEXELCU060006 | Poles RC Foundation | 2027-06-29 → 2027-08-09 (+41d) | 2027-07-03 → 2027-08-14 (+42d) |  | 19d → -16.62d |  |
| TAEXELCU060004 | Trench Backfilling | 2027-07-03 → 2027-08-12 (+40d) | 2027-07-13 → 2027-08-24 (+42d) |  | 11d → -24.62d |  |
| TAEXELCU060008 | Lighting Pole Installation with Luminares | 2027-07-04 → 2027-08-14 (+41d) | 2027-07-10 → 2027-08-21 (+42d) |  | 19d → -16.62d |  |
| TAEXELCU060005 | Cables Pulling | 2027-07-14 → 2027-08-24 (+41d) | 2027-07-18 → 2027-08-29 (+42d) |  | 11d → -24.62d |  |
| TAEXELCU060007 | Earthing cables | 2027-07-19 → 2027-08-29 (+41d) | 2027-07-20 → 2027-08-31 (+42d) |  | 11d → -24.62d |  |
| 23 | **CCTV Works** | 2027-06-12 → 2027-06-13 (+1d) | 2027-07-24 → 2027-07-26 (+2d) |  |  |  |
| TAEXCCCU060001 | Pipe Installation with manhole | 2027-06-02 → 2027-06-13 (+11d) | 2027-06-10 → 2027-06-22 (+12d) |  | 0d → 2.45d | TAEXCCCU140001 → TAEXCCCU140001 SS |
| TAEXCCCU060002 | CCTV Swiches Lighting panels Installation | 2027-06-12 → 2027-06-22 (+10d) | 2027-06-22 → 2027-07-04 (+12d) |  | 24d → 14.45d |  |
| TAEXCCCU060003 | Cable laying and connected with Panels | 2027-06-23 → 2027-07-04 (+11d) | 2027-07-03 → 2027-07-14 (+11d) |  | 24d → 14.45d |  |
| TAEXCCCU060004 | Pole Installation with IP Outdoor CCTV POE Camera | 2027-07-04 → 2027-07-14 (+10d) | 2027-07-14 → 2027-07-26 (+12d) |  | 24d → 14.45d |  |
| 7 | **Upgrade Local 07** | 2027-06-12 → 2026-08-22 (-294d) | 2027-07-24 → 2027-09-02 (+40d) |  |  |  |
| 23 | **Electrical Works** | 2027-06-30 → 2026-08-22 (-312d) | 2027-08-01 → 2027-09-02 (+32d) |  |  |  |
| TAEXELCU070003 | Road Crossing Ducts | 2027-07-06 → 2026-08-22 A (-318d) | 2027-07-08 → 2027-08-16 (+39d) | 0% → 33% | 10d → -22.98d |  |
| TAEXELCU070002 | Drawpit and PVC Pipes Installation | 2027-06-30 → 2026-08-22 A (-312d) | 2027-07-05 → 2027-08-14 (+40d) | 0% → 33% | 10d → -22.98d |  |
| TAEXELCU070001 | Trench Cut off | 2027-06-22 → 2027-08-02 (+41d) | 2027-06-29 → 2027-08-10 (+42d) |  | 0d → -24.67d |  |
| TAEXELCU070006 | Poles RC Foundation | 2027-07-06 → 2027-08-14 (+39d) | 2027-07-08 → 2027-08-17 (+40d) |  | 15d → -18.97d |  |
| TAEXELCU070004 | Trench Backfilling | 2027-07-10 → 2027-08-16 (+37d) | 2027-07-18 → 2027-08-25 (+38d) |  | 10d → -22.98d |  |
| TAEXELCU070008 | Lighting Pole Installation with Luminares | 2027-07-10 → 2027-08-17 (+38d) | 2027-07-14 → 2027-08-23 (+40d) |  | 15d → -18.97d |  |
| TAEXELCU070005 | Cables Pulling | 2027-07-19 → 2027-08-25 (+37d) | 2027-07-21 → 2027-08-29 (+39d) |  | 10d → -22.98d |  |
| TAEXELCU070007 | Earthing cables | 2027-07-22 → 2027-08-31 (+40d) | 2027-07-24 → 2027-09-02 (+40d) |  | 10d → -24.62d |  |
| 24 | **CCTV Works** | 2027-06-30 → 2027-06-22 (-8d) | 2027-08-11 → 2027-08-04 (-7d) |  |  |  |
| TAEXCCCU070001 | Pipe Installation with manhole | 2027-06-12 → 2027-06-22 (+10d) | 2027-06-20 → 2027-07-01 (+11d) |  | 0d → 2.45d |  |
| TAEXCCCU070002 | CCTV Swiches Lighting panels Installation | 2027-06-21 → 2027-07-01 (+10d) | 2027-07-01 → 2027-07-13 (+12d) |  | 16d → 6.45d |  |
| TAEXCCCU070003 | Cable laying and connected with Panels | 2027-07-03 → 2027-07-13 (+10d) | 2027-07-12 → 2027-07-24 (+12d) |  | 16d → 6.45d |  |
| TAEXCCCU070004 | Pole Installation with IP Outdoor CCTV POE Camera | 2027-07-13 → 2027-07-24 (+11d) | 2027-07-24 → 2027-08-04 (+11d) |  | 16d → 6.45d |  |
| 8 | **Upgrade Local 08** | 2027-06-21 → 2026-08-02 (-323d) | 2027-08-02 → 2027-09-04 (+33d) |  |  |  |
| 24 | **Electrical Works** | 2027-06-10 → 2026-08-02 (-312d) | 2027-07-20 → 2027-09-04 (+46d) |  |  |  |
| TAEXELCU080001 | Trench Cut off | 2027-06-30 → 2026-08-02 A (-332d) | 2027-07-07 → 2027-08-11 (+35d) | 0% → 85% | 0d → -24.67d |  |
| TAEXELCU080002 | Drawpit and PVC Pipes Installation | 2027-07-08 → 2026-08-29 A (-313d) | 2027-07-13 → 2027-08-15 (+33d) | 0% → 50% | 5d → -20.67d |  |
| TAEXELCU080003 | Road Crossing Ducts | 2027-07-14 → 2026-08-29 A (-319d) | 2027-07-17 → 2027-08-16 (+30d) | 0% → 50% | 5d → -20.67d |  |
| TAEXELCU080006 | Poles RC Foundation | 2027-07-14 → 2027-08-15 (+32d) | 2027-07-17 → 2027-08-18 (+32d) |  | 8d → -19.17d |  |

| ID | Task | Start | Finish | Complete | Total float | Predecessors |
| --- | --- | --- | --- | --- | --- | --- |
| TAEXELCU080004 | Trench Backfilling | 2027-07-18 → 2027-08-16 (+29d) | 2027-07-26 → 2027-08-25 (+30d) |  | 5d → -20.67d |  |
| TAEXELCU080008 | Lighting Pole Installation with Luminares | 2027-07-18 → 2027-08-18 (+31d) | 2027-07-22 → 2027-08-24 (+33d) |  | 8d → -19.17d |  |
| TAEXELCU080005 | Cables Pulling | 2027-07-27 → 2027-08-25 (+29d) | 2027-07-29 → 2027-08-29 (+31d) |  | 5d → -20.67d |  |
| TAEXELCU080007 | Earthing cables | 2027-07-31 → 2027-09-02 (+33d) | 2027-08-01 → 2027-09-04 (+34d) |  | 5d → -24.62d |  |
| 25 | **CCTV Works** | 2027-06-02 → 2027-06-22 (+20d) | 2027-07-14 → 2027-08-04 (+21d) |  |  |  |
| TAEXCCCU080001 | Pipe Installation with manhole | 2027-06-21 → 2027-06-22 (+1d) | 2027-06-29 → 2027-07-01 (+2d) |  | 0d → 2.45d | TAEXCCCU070001 → TAEXCCCU070001 SS |
| TAEXCCCU080002 | CCTV Swiches Lighting panels Installation | 2027-06-30 → 2027-07-01 (+1d) | 2027-07-11 → 2027-07-13 (+2d) |  | 8d → 6.45d |  |
| TAEXCCCU080003 | Cable laying and connected with Panels | 2027-07-12 → 2027-07-13 (+1d) | 2027-07-21 → 2027-07-24 (+3d) |  | 8d → 6.45d |  |
| TAEXCCCU080004 | Pole Installation with IP Outdoor CCTV POE Camera | 2027-07-22 → 2027-07-24 (+2d) | 2027-08-02 → 2027-08-04 (+2d) |  | 8d → 6.45d |  |
| 9 | **Upgrade Local 09** | 2027-06-30 → 2026-10-01 (-272d) | 2027-08-11 → 2027-09-06 (+26d) |  |  |  |
| 26 | **Electrical Works** | 2027-07-08 → 2026-10-01 (-280d) | 2027-08-09 → 2027-09-06 (+28d) |  |  |  |
| TAEXELCU090002 | Drawpit and PVC Pipes Installation | 2027-07-17 → 2026-10-01 A (-289d) | 2027-07-21 → 2026-10-03 A (-291d) | 0% → 100% | 0d → none |  |
| TAEXELCU090003 | Road Crossing Ducts | 2027-07-22 → 2026-10-01 A (-294d) | 2027-07-25 → 2026-10-03 A (-295d) | 0% → 100% | 0d → none |  |
| TAEXELCU090001 | Trench Cut off | 2027-07-08 → 2027-08-11 (+34d) | 2027-07-15 → 2027-08-19 (+35d) |  | 0d → -24.67d |  |
| TAEXELCU090004 | Trench Backfilling | 2027-07-26 → 2027-08-19 (+24d) | 2027-08-03 → 2027-08-29 (+26d) |  | 0d → -21.67d |  |
| TAEXELCU090006 | Poles RC Foundation | 2027-07-22 → 2027-08-19 (+28d) | 2027-07-26 → 2027-08-24 (+29d) |  | 0d → -24.67d |  |
| TAEXELCU090008 | Lighting Pole Installation with Luminares | 2027-07-27 → 2027-08-24 (+28d) | 2027-08-01 → 2027-08-30 (+29d) |  | 0d → -24.67d |  |
| TAEXELCU090005 | Cables Pulling | 2027-08-04 → 2027-08-29 (+25d) | 2027-08-07 → 2027-09-01 (+25d) |  | 0d → -21.67d |  |
| TAEXELCU090007 | Earthing cables | 2027-08-08 → 2027-09-04 (+27d) | 2027-08-09 → 2027-09-06 (+28d) |  | 0d → -24.62d |  |
| 1 | **CCTV Works** | 2027-05-25 → 2027-07-01 (+37d) | 2027-07-06 → 2027-08-14 (+39d) |  |  |  |
| TAEXCCCU090001 | Pipe Installation with manhole | 2027-06-30 → 2027-07-01 (+1d) | 2027-07-07 → 2027-07-10 (+3d) |  | 0d → 2.45d |  |
| TAEXCCCU090002 | CCTV Swiches Lighting panels Installation | 2027-07-08 → 2027-07-10 (+2d) | 2027-07-19 → 2027-07-21 (+2d) |  | 4d → 2.45d |  |
| TAEXCCCU090003 | Cable laying and connected with Panels | 2027-07-20 → 2027-07-21 (+1d) | 2027-07-31 → 2027-08-02 (+2d) |  | 4d → 2.45d |  |
| TAEXCCCU090004 | Pole Installation with IP Outdoor CCTV POE Camera | 2027-08-01 → 2027-08-02 (+1d) | 2027-08-11 → 2027-08-14 (+3d) |  | 4d → 2.45d |  |
| 10 | **Upgrade Local 12** | 2026-11-30 → 2026-06-16 (-167d) | 2027-08-14 → 2027-09-11 (+28d) |  |  |  |
| 18 | **Road works** | 2027-04-10 → 2027-03-14 (-27d) | 2027-07-15 → 2027-06-20 (-25d) |  |  |  |
| TAEXRDCU120002 | Precast Concret Kerps | 2027-04-10 → 2027-03-14 (-27d) | 2027-04-29 → 2027-04-04 (-25d) |  | 15d → 37.21d |  |
| TAEXRDCU120001 | BWC Asphalt Wearing Course with RC | 2027-06-16 → 2027-05-20 (-27d) | 2027-06-16 → 2027-05-22 (-25d) |  | 15d → 37.21d |  |
| TAEXRDCU120003 | Precast Interlock Works | 2027-06-17 → 2027-05-22 (-26d) | 2027-07-05 → 2027-06-09 (-26d) |  | 15d → 37.21d |  |
| TAEXRDCU120004 | Stone Paving works | 2027-07-06 → 2027-06-09 (-27d) | 2027-07-11 → 2027-06-15 (-26d) |  | 15d → 37.21d |  |
| TAEXRDCU120005 | Road Marking | 2027-07-12 → 2027-06-15 (-27d) | 2027-07-12 → 2027-06-16 (-26d) |  | 15d → 37.21d |  |
| TAEXRDCU120006 | Traffic Sinage | 2027-07-13 → 2027-06-16 (-27d) | 2027-07-15 → 2027-06-20 (-25d) |  | 15d → 37.21d |  |
| 19 | **Electrical Works** | 2027-05-30 → 2026-06-16 (-348d) | 2027-08-16 → 2027-09-11 (+26d) |  |  |  |
| TAEXELCU120001 | Trench Cut off | 2027-03-01 → 2026-06-16 A (-258d) | 2027-03-14 → 2027-04-28 (+45d) | 0% → 32% | 0d → -24.67d |  |
| TAEXELCU120002 | Drawpit and PVC Pipes Installation | 2027-03-15 → 2026-07-25 A (-233d) | 2027-03-24 → 2027-05-01 (+38d) | 0% → 79% | 89d → 62.59d |  |
| TAEXELCU120003 | Road Crossing Ducts | 2027-03-25 → 2026-07-25 A (-243d) | 2027-03-29 → 2027-05-02 (+34d) | 0% → 79% | 89d → 67.5d |  |
| TAEXELCU120005 | Cables Pulling | 2027-05-02 → 2026-07-26 A (-280d) | 2027-05-10 → 2027-06-13 (+34d) | 0% → 27% | 78d → 49.71d |  |
| TAEXELCU120004 | Trench Backfilling | 2027-04-12 → 2026-08-15 A (-240d) | 2027-05-01 → 2027-06-06 (+36d) | 0% → 27% | 78d → 49.71d |  |
| TAEXELCU120006 | Poles RC Foundation | 2027-03-25 → 2027-05-01 (+37d) | 2027-04-01 → 2027-05-09 (+38d) |  | 94d → 62.59d |  |
| TAEXELCU120008 | Lighting Pole Installation with Luminares | 2027-04-03 → 2027-05-09 (+36d) | 2027-04-13 → 2027-05-20 (+37d) |  | 94d → 62.59d |  |
| TAEXELCU120007 | Earthing cables | 2027-08-10 → 2027-09-06 (+27d) | 2027-08-14 → 2027-09-11 (+28d) |  | 0d → -24.62d |  |
| 1 | **Telecommunication Works** | 2027-02-11 → 2027-04-11 (+59d) | 2027-07-14 → 2027-07-25 (+11d) |  |  |  |
| TAEXTCCU120001 | Trench Cut off | 2027-02-11 → 2027-04-11 (+59d) | 2027-02-28 → 2027-04-28 (+59d) |  | 45d → -5.61d |  |
| TAEXTCCU120002 | Drawpit and PVC Pipes Installation | 2027-06-10 → 2027-06-20 (+10d) | 2027-06-20 → 2027-06-30 (+10d) |  | 0d → -8.27d |  |
| TAEXTCCU120003 | Road Crossing Ducts | 2027-06-21 → 2027-06-30 (+9d) | 2027-06-24 → 2027-07-05 (+11d) |  | 14d → 5.73d |  |
| TAEXTCCU120004 | Trench Backfilling | 2027-06-26 → 2027-07-05 (+9d) | 2027-07-14 → 2027-07-25 (+11d) |  | 14d → 5.73d |  |
| 15 | **CCTV Works** | 2027-06-21 → 2027-03-28 (-85d) | 2027-08-02 → 2027-05-23 (-71d) |  |  |  |
| TAEXCCCU120001 | Pipe Installation with manhole | 2027-03-09 → 2027-03-28 (+19d) | 2027-03-21 → 2027-04-10 (+20d) |  | 0d → -2.55d |  |
| TAEXCCCU120002 | CCTV Swiches Lighting panels Installation | 2027-03-22 → 2027-04-10 (+19d) | 2027-04-04 → 2027-04-24 (+20d) |  | 86d → 69.45d |  |
| TAEXCCCU120003 | Cable laying and connected with Panels | 2027-04-05 → 2027-04-24 (+19d) | 2027-04-17 → 2027-05-06 (+19d) |  | 86d → 69.45d |  |
| TAEXCCCU120004 | Pole Installation with IP Outdoor CCTV POE Camera | 2027-04-18 → 2027-05-06 (+18d) | 2027-05-03 → 2027-05-23 (+20d) |  | 86d → 69.45d |  |
| 2 | **Potable Networks** | 2026-12-29 → 2026-11-03 (-56d) | 2027-05-04 → 2027-03-10 (-55d) |  |  |  |
| TAEXPTCU120001 | Excavation works for Trench | 2026-12-29 → 2026-11-03 (-56d) | 2027-01-11 → 2026-11-17 (-55d) |  | 1d → 68.36d |  |
| TAEXPTCU120002 | Bedding Works | 2027-01-12 → 2026-11-17 (-56d) | 2027-01-13 → 2026-11-19 (-55d) |  | 40d → 107.36d |  |
| TAEXPTCU120003 | Install Pipes & Fittings | 2027-02-20 → 2026-12-26 (-56d) | 2027-02-28 → 2027-01-04 (-55d) |  | 9d → 76.36d |  |
| TAEXPTCU120004 | Backfilling Works for Trench | 2027-03-01 → 2027-01-04 (-56d) | 2027-03-21 → 2027-01-25 (-55d) |  | 9d → 76.36d |  |
| TAEXPTCU120005 | Install Valves with fittings | 2027-03-17 → 2027-01-20 (-56d) | 2027-03-21 → 2027-01-25 (-55d) |  | 9d → 76.36d |  |
| TAEXPTCU120006 | Install fire hydrent | 2027-03-22 → 2027-01-25 (-56d) | 2027-03-31 → 2027-02-04 (-55d) |  | 9d → 76.36d |  |
| TAEXPTCU120007 | Valve Chamber works | 2027-04-11 → 2027-02-14 (-56d) | 2027-04-28 → 2027-03-04 (-55d) |  | 1d → 68.36d |  |
| TAEXPTCU120008 | Inspection Test | 2027-04-29 → 2027-03-04 (-56d) | 2027-05-04 → 2027-03-10 (-55d) |  | 79d → 126.46d |  |
| 3 | **TSE Networks** | 2026-11-30 → 2026-09-27 (-64d) | 2027-05-15 → 2027-05-24 (+9d) |  |  |  |
| TAEXTSCU120005 | Install Valves with fittings | 2027-04-14 → 2026-09-27 A (-199d) | 2027-04-18 → 2027-05-02 (+14d) | 0% → 25% | 70d → 62.54d |  |
| TAEXTSCU120006 | Valve Chamber works | 2027-04-19 → 2026-09-27 A (-204d) | 2027-05-09 → 2027-05-18 (+9d) | 0% → 25% | 70d → 62.54d |  |
| TAEXTSCU120001 | Excavation works for Trench | 2026-11-30 → 2027-01-05 (+36d) | 2026-12-24 → 2027-01-31 (+38d) |  | 54d → 62.54d |  |
| TAEXTSCU120002 | Bedding Works | 2026-12-26 → 2027-01-31 (+36d) | 2026-12-27 → 2027-02-02 (+37d) |  | 124d → 112.54d |  |
| TAEXTSCU120003 | Install Pipes & Fittings | 2027-03-20 → 2027-04-01 (+12d) | 2027-03-28 → 2027-04-11 (+14d) |  | 54d → 62.54d |  |
| TAEXTSCU120004 | Backfilling Works for Trench | 2027-03-29 → 2027-04-11 (+13d) | 2027-04-18 → 2027-05-02 (+14d) |  | 70d → 62.54d |  |
| TAEXTSCU120007 | Inspection Test | 2027-05-10 → 2027-05-18 (+8d) | 2027-05-15 → 2027-05-24 (+9d) |  | 70d → 62.54d |  |
| 12 | **Sewerage Networks** | 2027-03-21 → 2026-11-04 (-137d) | 2027-06-01 → 2027-01-17 (-135d) |  |  |  |
| TAEXSWCU120001 | Excavation works for Trench | 2027-03-21 → 2026-11-04 (-137d) | 2027-04-07 → 2026-11-23 (-135d) |  | 2d → 131.03d |  |

| ID | Task | Start | Finish | Complete | Total float | Predecessors |
| --- | --- | --- | --- | --- | --- | --- |
| TAEXSWCU120002 | Bedding Works | 2027-04-08 → 2026-11-23 (-136d) | 2027-04-12 → 2026-11-28 (-135d) |  | 50d → 166.48d |  |
| TAEXSWCU120003 | Install GRP Pipes & Fittings | 2027-04-13 → 2026-11-28 (-136d) | 2027-04-28 → 2026-12-14 (-135d) |  | 50d → 166.48d |  |
| TAEXSWCU120004 | Backfilling Works for Trench | 2027-05-02 → 2026-12-16 (-137d) | 2027-05-16 → 2026-12-31 (-136d) |  | 50d → 166.48d |  |
| TAEXSWCU120005 | Manhole Installation with backfilling | 2027-05-15 → 2026-12-29 (-137d) | 2027-05-27 → 2027-01-12 (-135d) |  | 50d → 166.48d |  |
| TAEXSWCU120006 | Leakage Test | 2027-05-29 → 2027-01-12 (-137d) | 2027-06-01 → 2027-01-17 (-135d) |  | 50d → 166.48d |  |
| 4 | **Storm Networks** | 2027-03-30 → 2027-05-18 (+49d) | 2027-06-15 → 2027-08-04 (+50d) |  |  |  |
| TAEXSTCU120001 | Excavation works for Trench | 2027-03-30 → 2027-05-18 (+49d) | 2027-04-19 → 2027-06-08 (+50d) |  | 50d → 7.64d |  |
| TAEXSTCU120002 | Bedding Works | 2027-04-20 → 2027-06-08 (+49d) | 2027-04-24 → 2027-06-13 (+50d) |  | 50d → 7.64d |  |
| TAEXSTCU120003 | Install GRP Pipes & Fittings | 2027-04-25 → 2027-06-13 (+49d) | 2027-05-10 → 2027-06-29 (+50d) |  | 50d → 7.64d |  |
| TAEXSTCU120004 | Backfilling Works for Trench | 2027-05-13 → 2027-07-01 (+49d) | 2027-05-27 → 2027-07-17 (+51d) |  | 50d → 7.64d |  |
| TAEXSTCU120005 | Manhole Installation with backfilling | 2027-05-15 → 2027-07-03 (+49d) | 2027-05-27 → 2027-07-17 (+51d) |  | 50d → 7.64d |  |
| TAEXSTCU120006 | Install Catch Basin with UPVC Pipes & Fittings | 2027-05-29 → 2027-07-17 (+49d) | 2027-06-10 → 2027-07-31 (+51d) |  | 50d → 7.64d |  |
| TAEXSTCU120007 | Leakage Test | 2027-06-12 → 2027-07-31 (+49d) | 2027-06-15 → 2027-08-04 (+50d) |  | 50d → 7.64d |  |
| 11 | **Upgrade Local 14** | 2027-05-25 → 2026-07-31 (-298d) | 2027-08-16 → 2027-09-13 (+28d) |  |  |  |
| 21 | **Electrical Works** | 2027-03-01 → 2026-07-31 (-213d) | 2027-08-14 → 2027-09-13 (+30d) |  |  |  |
| TAEXELCU140001 | Trench Cut off | 2027-05-30 → 2026-07-31 A (-303d) | 2027-06-09 → 2027-07-21 (+42d) | 0% → 29% | 0d → -24.67d |  |
| TAEXELCU140005 | Cables Pulling | 2027-07-03 → 2026-08-02 A (-335d) | 2027-07-06 → 2027-08-16 (+41d) | 0% → 29% | 33d → -1.46d |  |
| TAEXELCU140002 | Drawpit and PVC Pipes Installation | 2027-06-10 → 2027-07-21 (+41d) | 2027-06-16 → 2027-07-28 (+42d) |  | 29d → -6.62d |  |
| TAEXELCU140003 | Road Crossing Ducts | 2027-06-17 → 2027-07-28 (+41d) | 2027-06-20 → 2027-08-01 (+42d) |  | 33d → -1.46d |  |
| TAEXELCU140006 | Poles RC Foundation | 2027-06-17 → 2027-07-28 (+41d) | 2027-06-21 → 2027-08-02 (+42d) |  | 29d → -6.62d |  |
| TAEXELCU140004 | Trench Backfilling | 2027-06-21 → 2027-08-01 (+41d) | 2027-07-01 → 2027-08-12 (+42d) |  | 33d → -1.46d |  |
| TAEXELCU140008 | Lighting Pole Installation with Luminares | 2027-06-22 → 2027-08-02 (+41d) | 2027-06-28 → 2027-08-09 (+42d) |  | 29d → -6.62d |  |
| TAEXELCU140007 | Earthing cables | 2027-08-15 → 2027-09-11 (+27d) | 2027-08-16 → 2027-09-13 (+28d) |  | 0d → -24.62d |  |
| 22 | **CCTV Works** | 2027-02-04 → 2027-06-13 (+129d) |  |  |  |  |
| TAEXCCCU140001 | Pipe Installation with manhole | 2027-05-25 → 2027-06-13 (+19d) | 2027-06-01 → 2027-06-21 (+20d) |  | 0d → -2.55d |  |
| TAEXCCCU140002 | CCTV Swiches Lighting panels Installation | 2027-06-02 → 2027-06-21 (+19d) | 2027-06-15 → 2027-07-05 (+20d) |  | 14d → -2.55d |  |
| TAEXCCCU140003 | Cable laying and connected with Panels | 2027-06-16 → 2027-07-05 (+19d) | 2027-06-24 → 2027-07-14 (+20d) |  | 31d → 14.45d |  |
| TAEXCCCU140004 | Pole Installation with IP Outdoor CCTV POE Camera | 2027-06-26 → 2027-07-14 (+18d) | 2027-07-06 → 2027-07-26 (+20d) |  | 31d → 14.45d |  |
| 12 | **Upgrade Local 18** | 2027-07-08 → 2027-07-01 (-7d) | 2027-08-10 → 2027-08-04 (-6d) |  |  |  |
| 27 | **CCTV Works** | 2027-03-09 → 2027-07-01 (+114d) | 2027-05-03 → 2027-08-04 (+93d) |  |  |  |
| TAEXCCCU180001 | Pipe Installation with manhole | 2027-07-08 → 2027-07-01 (-7d) | 2027-07-17 → 2027-07-11 (-6d) |  | 0d → 6.45d | TAEXCCCU090001 → TAEXCCCU090001 SS |
| TAEXCCCU180002 | CCTV Swiches Lighting panels Installation | 2027-07-18 → 2027-07-11 (-7d) | 2027-07-27 → 2027-07-21 (-6d) |  | 0d → 6.45d |  |
| TAEXCCCU180003 | Cable laying and connected with Panels | 2027-07-28 → 2027-07-21 (-7d) | 2027-08-04 → 2027-07-29 (-6d) |  | 0d → 6.45d |  |
| TAEXCCCU180004 | Pole Installation with IP Outdoor CCTV POE Camera | 2027-08-05 → 2027-07-29 (-7d) | 2027-08-10 → 2027-08-04 (-6d) |  | 0d → 6.45d |  |
| 13 | **Upgrade Local 20** | 2026-12-08 → 2026-08-08 (-122d) | 2027-08-21 → 2027-09-18 (+28d) |  |  |  |
| 16 | **Electrical Works** | 2027-01-21 → 2026-08-08 (-166d) | 2027-08-21 → 2027-09-18 (+28d) |  |  |  |
| TAEXELCU200001 | Trench Cut off | 2027-01-21 → 2026-08-08 A (-166d) | 2027-02-02 → 2027-03-24 (+50d) | 0% → 36% | 0d → -24.67d |  |
| TAEXELCU200005 | Cables Pulling | 2027-04-03 → 2026-08-16 A (-230d) | 2027-04-06 → 2027-04-25 (+19d) | 0% → 59% | 98d → 82.26d |  |
| TAEXELCU200004 | Trench Backfilling | 2027-03-17 → 2026-08-23 A (-206d) | 2027-04-01 → 2027-04-24 (+23d) | 0% → 44% | 98d → 82.26d |  |
| TAEXELCU200002 | Drawpit and PVC Pipes Installation | 2027-03-02 → 2026-08-29 A (-185d) | 2027-03-11 → 2027-04-10 (+30d) | 0% → 13% | 98d → 81.22d |  |
| TAEXELCU200003 | Road Crossing Ducts | 2027-03-13 → 2026-08-29 A (-196d) | 2027-03-16 → 2027-04-14 (+29d) | 0% → 13% | 98d → 82.26d |  |
| TAEXELCU200006 | Poles RC Foundation | 2027-03-13 → 2027-04-10 (+28d) | 2027-03-20 → 2027-04-18 (+29d) |  | 106d → 81.22d |  |
| TAEXELCU200008 | Lighting Pole Installation with Luminares | 2027-03-21 → 2027-04-18 (+28d) | 2027-03-30 → 2027-04-28 (+29d) |  | 106d → 81.22d |  |
| TAEXELCU200009 | Install Substation & RMU | 2027-04-22 → 2027-04-25 (+3d) | 2027-05-02 → 2027-05-05 (+3d) |  | 85d → 82.26d |  |
| TAEXELCU200007 | Earthing cables | 2027-08-17 → 2027-09-13 (+27d) | 2027-08-21 → 2027-09-18 (+28d) |  | 0d → -24.62d |  |
| 14 | **CCTV Works** | 2027-02-28 → 2027-02-23 (-5d) | 2027-07-08 → 2027-08-15 (+38d) |  |  |  |
| TAEXCCCU200001 | Pipe Installation with manhole | 2027-02-04 → 2027-02-23 (+19d) | 2027-02-15 → 2027-03-07 (+20d) |  | 0d → -2.55d |  |
| TAEXCCCU200002 | CCTV Swiches Lighting panels Installation | 2027-06-16 → 2027-07-05 (+19d) | 2027-06-30 → 2027-07-20 (+20d) |  | 14d → -2.55d |  |
| TAEXCCCU200003 | Cable laying and connected with Panels | 2027-07-01 → 2027-07-20 (+19d) | 2027-07-12 → 2027-08-01 (+20d) |  | 14d → -2.55d |  |
| TAEXCCCU200004 | Pole Installation with IP Outdoor CCTV POE Camera | 2027-07-13 → 2027-08-01 (+19d) | 2027-07-26 → 2027-08-15 (+20d) |  | 14d → -2.55d |  |
| 1 | **Potable Networks** | 2026-12-08 → 2026-10-05 (-64d) | 2027-02-28 → 2027-01-04 (-55d) |  |  |  |
| TAEXPTCU200007 | Valve Chamber works | 2026-12-08 → 2026-10-05 (-64d) | 2026-12-27 → 2026-10-24 (-64d) |  | 52d → 126.9d |  |
| TAEXPTCU200008 | Inspection Test | 2026-12-28 → 2026-10-25 (-64d) | 2027-01-02 → 2026-10-29 (-65d) |  | 184d → 239d |  |
| TAEXPTCU200001 | Excavation works for Trench | 2027-01-12 → 2026-11-17 (-56d) | 2027-01-21 → 2026-11-28 (-54d) |  | 1d → 68.36d |  |
| TAEXPTCU200002 | Bedding Works | 2027-01-23 → 2026-11-28 (-56d) | 2027-01-24 → 2026-11-30 (-55d) |  | 2d → 69.36d |  |
| TAEXPTCU200003 | Install Pipes & Fittings | 2027-01-25 → 2026-11-30 (-56d) | 2027-02-02 → 2026-12-09 (-55d) |  | 2d → 69.36d |  |
| TAEXPTCU200004 | Backfilling Works for Trench | 2027-02-03 → 2026-12-09 (-56d) | 2027-02-21 → 2026-12-28 (-55d) |  | 122d → 174.46d |  |
| TAEXPTCU200005 | Install Valves with fittings | 2027-02-17 → 2026-12-23 (-56d) | 2027-02-21 → 2026-12-28 (-55d) |  | 122d → 174.46d |  |
| TAEXPTCU200006 | Install fire hydrent | 2027-02-22 → 2026-12-28 (-56d) | 2027-02-28 → 2027-01-04 (-55d) |  | 122d → 174.46d |  |
| 2 | **TSE Networks** | 2026-12-26 → 2027-01-31 (+36d) | 2027-03-14 → 2027-04-20 (+37d) |  |  |  |
| TAEXTSCU200001 | Excavation works for Trench | 2026-12-26 → 2027-01-31 (+36d) | 2027-01-17 → 2027-02-23 (+37d) |  | 54d → 62.54d |  |
| TAEXTSCU200002 | Bedding Works | 2027-01-18 → 2027-02-23 (+36d) | 2027-01-19 → 2027-02-25 (+37d) |  | 83d → 79.54d |  |
| TAEXTSCU200003 | Install Pipes & Fittings | 2027-01-20 → 2027-02-25 (+36d) | 2027-01-28 → 2027-03-07 (+38d) |  | 83d → 79.54d |  |
| TAEXTSCU200004 | Backfilling Works for Trench | 2027-01-30 → 2027-03-07 (+36d) | 2027-02-16 → 2027-03-25 (+37d) |  | 123d → 91.04d |  |
| TAEXTSCU200005 | Install Valves with fittings | 2027-02-13 → 2027-03-21 (+36d) | 2027-02-16 → 2027-03-25 (+37d) |  | 123d → 91.04d |  |
| TAEXTSCU200006 | Valve Chamber works | 2027-02-17 → 2027-03-25 (+36d) | 2027-03-08 → 2027-04-14 (+37d) |  | 123d → 91.04d |  |
| TAEXTSCU200007 | Inspection Test | 2027-03-09 → 2027-04-14 (+36d) | 2027-03-14 → 2027-04-20 (+37d) |  | 123d → 91.04d |  |
| 3 | **Sewerage Networks** | 2027-04-08 → 2026-11-23 (-136d) | 2027-06-15 → 2027-01-31 (-135d) |  |  |  |
| TAEXSWCU200001 | Excavation works for Trench | 2027-04-08 → 2026-11-23 (-136d) | 2027-04-25 → 2026-12-10 (-136d) |  | 2d → 131.03d |  |
| TAEXSWCU200002 | Bedding Works | 2027-04-26 → 2026-12-10 (-137d) | 2027-04-28 → 2026-12-14 (-135d) |  | 38d → 154.48d |  |

| ID | Task | Start | Finish | Complete | Total float |
| --- | --- | --- | --- | --- | --- |
| TAEXSWCU200003 | Install GRP Pipes & Fittings | 2027-04-29 → 2026-12-14 (-136d) | 2027-05-12 → 2026-12-28 (-135d) |  | 38d → 154.48d |
| TAEXSWCU200004 | Backfilling Works for Trench | 2027-05-11 → 2026-12-26 (-136d) | 2027-05-30 → 2027-01-14 (-136d) |  | 38d → 154.48d |
| TAEXSWCU200005 | Manhole Installation with backfilling | 2027-05-24 → 2027-01-07 (-137d) | 2027-06-10 → 2027-01-26 (-135d) |  | 38d → 154.48d |
| TAEXSWCU200006 | Leakage Test | 2027-06-12 → 2027-01-26 (-137d) | 2027-06-15 → 2027-01-31 (-135d) |  | 38d → 154.48d |
| 14 | **Upgrade Local 29** | 2027-02-07 → 2026-07-05 (-217d) | 2027-08-23 → 2027-09-20 (+28d) |  |  |
| 25 | **Road Works** | 2027-06-05 → 2026-07-25 (-315d) | 2027-06-30 → 2027-05-11 (-50d) |  |  |
| TAEXRDCU290001 | Asphalt Milling and Deisposal | 2027-03-18 → 2026-07-25 A (-236d) | 2027-03-22 → 2026-07-26 A (-239d) | 0% → 100% | 15d → none |
| TAEXRDCU290002 | MBC1 layer | 2027-03-23 → 2027-02-24 (-27d) | 2027-03-23 → 2027-02-25 (-26d) |  | 15d → 37.21d |
| TAEXRDCU290003 | BBC Base Course | 2027-03-24 → 2027-02-25 (-27d) | 2027-03-28 → 2027-03-02 (-26d) |  | 15d → 37.21d |
| TAEXRDCU290005 | Precast Concret Kerps | 2027-03-29 → 2027-03-02 (-27d) | 2027-04-08 → 2027-03-14 (-25d) |  | 15d → 37.21d |
| TAEXRDCU290004 | BWC Asphalt Wearing Course with RC | 2027-04-10 → 2027-03-14 (-27d) | 2027-04-12 → 2027-03-17 (-26d) |  | 49d → 71.21d |
| TAEXRDCU290006 | Precast Interlock Works | 2027-05-24 → 2027-04-27 (-27d) | 2027-06-01 → 2027-05-06 (-26d) |  | 49d → 71.21d |
| TAEXRDCU290007 | Stone Paving works | 2027-06-02 → 2027-05-06 (-27d) | 2027-06-03 → 2027-05-09 (-25d) |  | 49d → 71.21d |
| TAEXRDCU290008 | Road Marking | 2027-06-05 → 2027-05-09 (-27d) | 2027-06-05 → 2027-05-10 (-26d) |  | 49d → 71.21d |
| TAEXRDCU290009 | Traffic Sinage | 2027-06-06 → 2027-05-10 (-27d) | 2027-06-06 → 2027-05-11 (-26d) |  | 49d → 71.21d |
| 20 | **Electrical Works** | 2027-02-03 → 2027-07-01 (+148d) | 2027-08-28 → 2027-09-20 (+23d) |  |  |
| TAEXELCU290001 | Trench Cut off | 2027-05-18 → 2027-07-01 (+44d) | 2027-05-29 → 2027-07-13 (+45d) |  | 0d → -24.67d |
| TAEXELCU290002 | Drawpit and PVC Pipes Installation | 2027-05-30 → 2027-07-13 (+44d) | 2027-06-05 → 2027-07-20 (+45d) |  | 39d → 0.48d |
| TAEXELCU290003 | Road Crossing Ducts | 2027-06-06 → 2027-07-20 (+44d) | 2027-06-08 → 2027-07-24 (+46d) |  | 49d → 10.48d |
| TAEXELCU290006 | Poles RC Foundation | 2027-06-06 → 2027-07-20 (+44d) | 2027-06-09 → 2027-07-25 (+46d) |  | 39d → 0.48d |
| TAEXELCU290004 | Trench Backfilling | 2027-06-09 → 2027-07-24 (+45d) | 2027-06-20 → 2027-08-04 (+45d) |  | 49d → 10.48d |
| TAEXELCU290008 | Lighting Pole Installation with Luminares | 2027-06-10 → 2027-07-25 (+45d) | 2027-06-16 → 2027-08-01 (+46d) |  | 39d → 0.48d |
| TAEXELCU290005 | Cables Pulling | 2027-06-21 → 2027-08-04 (+44d) | 2027-06-24 → 2027-08-09 (+46d) |  | 49d → 10.48d |
| TAEXELCU290007 | Earthing cables | 2027-08-22 → 2027-09-18 (+27d) | 2027-08-23 → 2027-09-20 (+28d) |  | 0d → -24.62d |
| 1 | **Telecommunication Works** | 2027-02-16 → 2027-06-12 (+116d) | 2027-08-07 → 2027-07-22 (-16d) |  |  |
| TAEXTCCU290001 | Trench Cut off | 2027-04-14 → 2027-06-12 (+59d) | 2027-04-25 → 2027-06-23 (+59d) |  | 48d → -2.61d |
| TAEXTCCU290002 | Drawpit and PVC Pipes Installation | 2027-06-21 → 2027-06-30 (+9d) | 2027-06-27 → 2027-07-07 (+10d) |  | 0d → -8.27d |
| TAEXTCCU290003 | Road Crossing Ducts | 2027-06-28 → 2027-07-07 (+9d) | 2027-06-30 → 2027-07-11 (+11d) |  | 16d → 7.73d |
| TAEXTCCU290004 | Trench Backfilling | 2027-07-01 → 2027-07-11 (+10d) | 2027-07-12 → 2027-07-22 (+10d) |  | 16d → 7.73d |
| 21 | **CCTV Works** | 2027-07-08 → 2027-06-05 (-33d) | 2027-08-10 → 2027-07-17 (-24d) |  |  |
| TAEXCCCU290001 | Pipe Installation with manhole | 2027-05-17 → 2027-06-05 (+19d) | 2027-05-24 → 2027-06-13 (+20d) |  | 0d → -2.55d |
| TAEXCCCU290002 | CCTV Swiches Lighting panels Installation | 2027-05-25 → 2027-06-13 (+19d) | 2027-06-05 → 2027-06-24 (+19d) |  | 29d → 12.45d |
| TAEXCCCU290003 | Cable laying and connected with Panels | 2027-06-06 → 2027-06-24 (+18d) | 2027-06-15 → 2027-07-05 (+20d) |  | 39d → 22.45d |
| TAEXCCCU290004 | Pole Installation with IP Outdoor CCTV POE Camera | 2027-06-16 → 2027-07-05 (+19d) | 2027-06-27 → 2027-07-17 (+20d) |  | 39d → 22.45d |
| 2 | **Potable Networks** | 2026-12-28 → 2026-07-05 (-176d) | 2027-03-10 → 2027-05-29 (+80d) |  |  |
| TAEXPTCU290001 | Excavation works for Trench | 2027-02-07 → 2026-07-05 A (-217d) | 2027-02-10 → 2026-07-15 A (-210d) | 0% → 100% | 118d → none |
| TAEXPTCU290002 | Bedding Works | 2027-02-11 → 2026-07-15 A (-211d) | 2027-02-13 → 2026-07-16 A (-212d) | 0% → 100% | 118d → none |
| TAEXPTCU290003 | Install Pipes & Fittings | 2027-02-14 → 2026-07-16 A (-213d) | 2027-02-18 → 2026-07-29 A (-204d) | 0% → 100% | 118d → none |
| TAEXPTCU290004 | Backfilling Works for Trench | 2027-02-20 → 2026-08-09 A (-195d) | 2027-03-04 → 2026-08-23 A (-193d) | 0% → 100% | 118d → none |
| TAEXPTCU290005 | Install Valves with fittings | 2027-03-01 → 2026-08-23 A (-190d) | 2027-03-04 → 2026-08-23 A (-193d) | 0% → 100% | 118d → none |
| TAEXPTCU290006 | Install fire hydrent | 2027-03-06 → 2026-10-01 A (-156d) | 2027-03-10 → 2026-10-04 A (-157d) | 0% → 100% | 118d → none |
| TAEXPTCU290007 | Valve Chamber works | 2027-07-26 → 2027-05-08 (-79d) | 2027-08-11 → 2027-05-25 (-78d) |  | 1d → 68.36d |
| TAEXPTCU290008 | Inspection Test | 2027-08-12 → 2027-05-25 (-79d) | 2027-08-15 → 2027-05-29 (-78d) |  | 1d → 68.36d |
| 3 | **TSE Networks** | 2027-01-18 → 2026-07-12 (-190d) | 2027-04-06 → 2027-04-14 (+8d) |  |  |
| TAEXTSCU290001 | Excavation works for Trench | 2027-03-11 → 2026-07-12 A (-242d) | 2027-03-15 → 2026-07-16 A (-242d) | 0% → 100% | 85d → none |
| TAEXTSCU290002 | Bedding Works | 2027-03-16 → 2026-07-25 A (-234d) | 2027-03-17 → 2026-07-26 A (-234d) | 0% → 100% | 85d → none |
| TAEXTSCU290003 | Install Pipes & Fittings | 2027-03-18 → 2026-07-26 A (-235d) | 2027-03-23 → 2026-08-02 A (-233d) | 0% → 100% | 85d → none |
| TAEXTSCU290004 | Backfilling Works for Trench | 2027-03-24 → 2026-08-09 A (-227d) | 2027-04-06 → 2026-08-23 A (-226d) | 0% → 100% | 85d → none |
| TAEXTSCU290005 | Install Valves with fittings | 2027-04-03 → 2026-08-23 A (-223d) | 2027-04-06 → 2026-08-23 A (-226d) | 0% → 100% | 85d → none |
| TAEXTSCU290006 | Valve Chamber works | 2027-04-07 → 2027-03-24 (-14d) | 2027-04-24 → 2027-04-11 (-13d) |  | 85d → 96.04d |
| TAEXTSCU290007 | Inspection Test | 2027-04-25 → 2027-04-11 (-14d) | 2027-04-27 → 2027-04-14 (-13d) |  | 85d → 96.04d |
| 15 | **Upgrade Local 32** | 2026-12-28 → 2026-08-11 (-139d) | 2027-08-28 → 2027-09-25 (+28d) |  |  |
| 17 | **Electrical Works** | 2027-02-16 → 2027-03-24 (+36d) | 2027-08-30 → 2027-09-25 (+26d) |  |  |
| TAEXELCU320001 | Trench Cut off | 2027-02-03 → 2027-03-24 (+49d) | 2027-02-15 → 2027-04-06 (+50d) |  | 0d → -24.67d |
| TAEXELCU320002 | Drawpit and PVC Pipes Installation | 2027-03-02 → 2027-04-06 (+35d) | 2027-03-06 → 2027-04-11 (+36d) |  | 111d → 80.64d |
| TAEXELCU320003 | Road Crossing Ducts | 2027-03-07 → 2027-04-11 (+35d) | 2027-03-20 → 2027-04-25 (+36d) |  | 114d → 83.64d |
| TAEXELCU320006 | Poles RC Foundation | 2027-03-07 → 2027-04-11 (+35d) | 2027-03-14 → 2027-04-19 (+36d) |  | 111d → 80.64d |
| TAEXELCU320008 | Lighting Pole Installation with Luminares | 2027-03-15 → 2027-04-19 (+35d) | 2027-03-24 → 2027-04-29 (+36d) |  | 111d → 80.64d |
| TAEXELCU320004 | Trench Backfilling | 2027-03-21 → 2027-04-25 (+35d) | 2027-04-07 → 2027-05-13 (+36d) |  | 114d → 83.64d |
| TAEXELCU320005 | Cables Pulling | 2027-04-08 → 2027-05-13 (+35d) | 2027-04-12 → 2027-05-18 (+36d) |  | 114d → 83.64d |
| TAEXELCU320007 | Earthing cables | 2027-08-24 → 2027-09-20 (+27d) | 2027-08-28 → 2027-09-25 (+28d) |  | 0d → -24.62d |
| 4 | **Telecommunication Works** | 2027-02-06 → 2027-03-07 (+29d) | 2027-07-31 → 2027-08-17 (+17d) |  |  |
| TAEXCCCU320001 | Pipe Installation with manhole | 2027-02-16 → 2027-03-07 (+19d) | 2027-02-27 → 2027-03-18 (+19d) |  | 0d → -2.55d |
| TAEXCCCU320002 | CCTV Swiches Lighting panels Installation | 2027-06-28 → 2027-07-07 (+9d) | 2027-07-12 → 2027-07-22 (+10d) |  | 0d → -8.27d |
| TAEXCCCU320003 | Cable laying and connected with Panels | 2027-07-13 → 2027-07-22 (+9d) | 2027-07-24 → 2027-08-03 (+10d) |  | 4d → -4.27d |
| TAEXCCCU320004 | Pole Installation with IP Outdoor CCTV POE Camera | 2027-07-25 → 2027-08-03 (+9d) | 2027-08-07 → 2027-08-17 (+10d) |  | 4d → -4.27d |
| 16 | **Potable Networks** | 2027-02-02 → 2026-10-25 (-100d) | 2027-04-13 → 2027-01-14 (-89d) |  |  |
| TAEXPTCU320007 | Valve Chamber works | 2026-12-28 → 2026-10-25 (-64d) | 2027-01-16 → 2026-11-12 (-65d) |  | 52d → 126.9d |
| TAEXPTCU320008 | Inspection Test | 2027-01-17 → 2026-11-14 (-64d) | 2027-01-21 → 2026-11-18 (-64d) |  | 162d → 217d |
| TAEXPTCU320001 | Excavation works for Trench | 2027-01-23 → 2026-11-28 (-56d) | 2027-02-01 → 2026-12-08 (-55d) |  | 1d → 68.36d |

| ID | Task | Start | Finish | Complete | Total float |
| --- | --- | --- | --- | --- | --- |
| TAEXPTCU320002 | Bedding Works | 2027-02-02 → 2026-12-08 (-56d) | 2027-02-03 → 2026-12-10 (-55d) |  | 1d → 68.36d |
| TAEXPTCU320003 | Install Pipes & Fittings | 2027-02-04 → 2026-12-10 (-56d) | 2027-02-13 → 2026-12-20 (-55d) |  | 1d → 68.36d |
| TAEXPTCU320004 | Backfilling Works for Trench | 2027-02-14 → 2026-12-20 (-56d) | 2027-03-03 → 2027-01-07 (-55d) |  | 1d → 68.36d |
| TAEXPTCU320005 | Install Valves with fittings | 2027-02-28 → 2027-01-03 (-56d) | 2027-03-03 → 2027-01-07 (-55d) |  | 1d → 68.36d |
| TAEXPTCU320006 | Install fire hydrent | 2027-03-04 → 2027-01-07 (-56d) | 2027-03-10 → 2027-01-14 (-55d) |  | 1d → 68.36d |
| 1 | **TSE Networks** | 2027-02-10 → 2026-08-11 (-183d) | 2027-04-22 → 2027-04-20 (-2d) |  |  |
| TAEXTSCU320001 | Excavation works for Trench | 2027-01-18 → 2026-08-11 A (-160d) | 2027-02-09 → 2026-08-11 A (-182d) | 0% → 100% | 54d → none |
| TAEXTSCU320002 | Bedding Works | 2027-02-10 → 2026-08-16 A (-178d) | 2027-02-11 → 2026-08-23 A (-172d) | 0% → 100% | 71d → none |
| TAEXTSCU320003 | Install Pipes & Fittings | 2027-02-13 → 2026-08-16 A (-181d) | 2027-02-21 → 2026-08-23 A (-182d) | 0% → 100% | 71d → none |
| TAEXTSCU320005 | Install Valves with fittings | 2027-03-08 → 2026-10-04 A (-155d) | 2027-03-11 → 2027-03-25 (+14d) | 0% → 20% | 103d → 91.04d |
| TAEXTSCU320004 | Backfilling Works for Trench | 2027-02-22 → 2027-03-07 (+13d) | 2027-03-11 → 2027-03-25 (+14d) |  | 103d → 91.04d |
| TAEXTSCU320006 | Valve Chamber works | 2027-03-13 → 2027-03-25 (+12d) | 2027-03-31 → 2027-04-14 (+14d) |  | 103d → 91.04d |
| TAEXTSCU320007 | Inspection Test | 2027-04-01 → 2027-04-14 (+13d) | 2027-04-06 → 2027-04-20 (+14d) |  | 103d → 91.04d |
| 3 | **Storm Networks** | 2027-02-16 → 2027-04-06 (+49d) | 2027-04-29 → 2027-06-19 (+51d) |  |  |
| TAEXSTCU320001 | Excavation works for Trench | 2027-02-16 → 2027-04-06 (+49d) | 2027-02-27 → 2027-04-18 (+50d) |  | 50d → 7.64d |
| TAEXSTCU320002 | Bedding Works | 2027-02-28 → 2027-04-18 (+49d) | 2027-03-02 → 2027-04-21 (+50d) |  | 68d → 25.64d |
| TAEXSTCU320003 | Install GRP Pipes & Fittings | 2027-03-03 → 2027-04-21 (+49d) | 2027-03-09 → 2027-04-28 (+50d) |  | 68d → 25.64d |
| TAEXSTCU320004 | Backfilling Works for Trench | 2027-03-08 → 2027-04-26 (+49d) | 2027-03-27 → 2027-05-16 (+50d) |  | 68d → 25.64d |
| TAEXSTCU320005 | Manhole Installation with backfilling | 2027-03-21 → 2027-05-09 (+49d) | 2027-04-07 → 2027-05-27 (+50d) |  | 68d → 25.64d |
| TAEXSTCU320006 | Install Catch Basin with UPVC Pipes & Fittings | 2027-04-08 → 2027-05-27 (+49d) | 2027-04-25 → 2027-06-14 (+50d) |  | 68d → 25.64d |
| TAEXSTCU320007 | Leakage Test | 2027-04-26 → 2027-06-14 (+49d) | 2027-04-29 → 2027-06-19 (+51d) |  | 90d → 47.64d |
| 16 | **Upgrade Local 33** | 2027-02-02 → 2026-09-20 (-135d) | 2027-08-30 → 2027-09-27 (+28d) |  |  |
| 27 | **Road Works** | 2027-03-18 → 2027-05-09 (+52d) | 2027-06-06 → 2027-06-05 (-1d) |  |  |
| TAEXRDCU330002 | Precast Concret Kerps | 2027-06-05 → 2027-05-09 (-27d) | 2027-06-15 → 2027-05-20 (-26d) |  | 28d → 50.21d |
| TAEXRDCU330001 | BWC Asphalt Wearing Course with RC | 2027-06-16 → 2027-05-20 (-27d) | 2027-06-16 → 2027-05-22 (-25d) |  | 28d → 50.21d |
| TAEXRDCU330003 | Precast Interlock Works | 2027-06-17 → 2027-05-22 (-26d) | 2027-06-26 → 2027-05-31 (-26d) |  | 28d → 50.21d |
| TAEXRDCU330004 | Stone Paving works | 2027-06-27 → 2027-05-31 (-27d) | 2027-06-28 → 2027-06-02 (-26d) |  | 28d → 50.21d |
| TAEXRDCU330005 | Road Marking | 2027-06-29 → 2027-06-02 (-27d) | 2027-06-29 → 2027-06-03 (-26d) |  | 28d → 50.21d |
| TAEXRDCU330006 | Traffic Sinage | 2027-06-30 → 2027-06-03 (-27d) | 2027-06-30 → 2027-06-05 (-25d) |  | 28d → 50.21d |
| 18 | **Electrical Works** | 2027-05-18 → 2027-04-06 (-42d) | 2027-08-23 → 2027-09-27 (+35d) |  |  |
| TAEXELCU330001 | Trench Cut off | 2027-02-16 → 2027-04-06 (+49d) | 2027-02-28 → 2027-04-19 (+50d) |  | 0d → -24.67d |
| TAEXELCU330002 | Drawpit and PVC Pipes Installation | 2027-03-02 → 2027-04-19 (+48d) | 2027-03-11 → 2027-04-29 (+49d) |  | 114d → 72.64d |
| TAEXELCU330003 | Road Crossing Ducts | 2027-03-13 → 2027-04-29 (+47d) | 2027-03-23 → 2027-05-11 (+49d) |  | 119d → 77.64d |
| TAEXELCU330006 | Poles RC Foundation | 2027-03-13 → 2027-04-29 (+47d) | 2027-03-16 → 2027-05-04 (+49d) |  | 114d → 72.64d |
| TAEXELCU330008 | Lighting Pole Installation with Luminares | 2027-03-17 → 2027-05-04 (+48d) | 2027-03-21 → 2027-05-09 (+49d) |  | 114d → 72.64d |
| TAEXELCU330004 | Trench Backfilling | 2027-03-24 → 2027-05-11 (+48d) | 2027-04-07 → 2027-05-26 (+49d) |  | 119d → 77.64d |
| TAEXELCU330005 | Cables Pulling | 2027-04-08 → 2027-05-26 (+48d) | 2027-04-11 → 2027-05-30 (+49d) |  | 119d → 77.64d |
| TAEXELCU330007 | Earthing cables | 2027-08-29 → 2027-09-25 (+27d) | 2027-08-30 → 2027-09-27 (+28d) |  | 0d → -24.62d |
| 1 | **Telecommunication Works** | 2027-04-14 → 2027-04-05 (-9d) | 2027-07-12 → 2027-08-10 (+29d) |  |  |
| TAEXTCCU330001 | Trench Cut off | 2027-02-06 → 2027-04-05 (+58d) | 2027-02-10 → 2027-04-11 (+60d) |  | 45d → -5.61d |
| TAEXTCCU330002 | Drawpit and PVC Pipes Installation | 2027-07-13 → 2027-07-22 (+9d) | 2027-07-17 → 2027-07-27 (+10d) |  | 0d → -8.27d |
| TAEXTCCU330003 | Road Crossing Ducts | 2027-07-18 → 2027-07-27 (+9d) | 2027-07-20 → 2027-07-31 (+11d) |  | 0d → -8.27d |
| TAEXTCCU330004 | Trench Backfilling | 2027-07-21 → 2027-07-31 (+10d) | 2027-07-31 → 2027-08-10 (+10d) |  | 0d → -8.27d |
| 17 | **CCTV Works** | 2027-05-17 → 2027-03-18 (-60d) | 2027-06-27 → 2027-07-28 (+31d) |  |  |
| TAEXCCCU330001 | Pipe Installation with manhole | 2027-02-28 → 2027-03-18 (+18d) | 2027-03-08 → 2027-03-28 (+20d) |  | 0d → -2.55d |
| TAEXCCCU330002 | CCTV Swiches Lighting panels Installation | 2027-06-06 → 2027-06-24 (+18d) | 2027-06-16 → 2027-07-06 (+20d) |  | 29d → 12.45d |
| TAEXCCCU330003 | Cable laying and connected with Panels | 2027-06-17 → 2027-07-06 (+19d) | 2027-06-27 → 2027-07-17 (+20d) |  | 29d → 12.45d |
| TAEXCCCU330004 | Pole Installation with IP Outdoor CCTV POE Camera | 2027-06-28 → 2027-07-17 (+19d) | 2027-07-08 → 2027-07-28 (+20d) |  | 29d → 12.45d |
| 2 | **Potable Networks** | 2027-02-07 → 2026-12-08 (-61d) | 2027-08-15 → 2027-02-17 (-179d) |  |  |
| TAEXPTCU330001 | Excavation works for Trench | 2027-02-02 → 2026-12-08 (-56d) | 2027-02-06 → 2026-12-13 (-55d) |  | 10d → 77.36d |
| TAEXPTCU330002 | Bedding Works | 2027-02-07 → 2026-12-13 (-56d) | 2027-02-08 → 2026-12-15 (-55d) |  | 10d → 77.36d |
| TAEXPTCU330003 | Install Pipes & Fittings | 2027-02-14 → 2026-12-20 (-56d) | 2027-02-18 → 2026-12-26 (-54d) |  | 6d → 73.36d |
| TAEXPTCU330004 | Backfilling Works for Trench | 2027-02-20 → 2026-12-26 (-56d) | 2027-03-04 → 2027-01-09 (-54d) |  | 6d → 73.36d |
| TAEXPTCU330005 | Install Valves with fittings | 2027-03-01 → 2027-01-04 (-56d) | 2027-03-04 → 2027-01-09 (-54d) |  | 6d → 73.36d |
| TAEXPTCU330006 | Install fire hydrent | 2027-03-11 → 2027-01-14 (-56d) | 2027-03-16 → 2027-01-20 (-55d) |  | 1d → 68.36d |
| TAEXPTCU330007 | Valve Chamber works | 2027-03-17 → 2027-01-20 (-56d) | 2027-04-10 → 2027-02-14 (-55d) |  | 1d → 68.36d |
| TAEXPTCU330008 | Inspection Test | 2027-04-11 → 2027-02-14 (-56d) | 2027-04-13 → 2027-02-17 (-55d) |  | 97d → 144.46d |
| 3 | **TSE Networks** | 2027-03-11 → 2027-02-23 (-16d) | 2027-04-27 → 2027-05-06 (+9d) |  |  |
| TAEXTSCU330001 | Excavation works for Trench | 2027-02-10 → 2027-02-23 (+13d) | 2027-03-10 → 2027-03-24 (+14d) |  | 54d → 62.54d |
| TAEXTSCU330002 | Bedding Works | 2027-03-11 → 2027-03-24 (+13d) | 2027-03-13 → 2027-03-27 (+14d) |  | 54d → 62.54d |
| TAEXTSCU330003 | Install Pipes & Fittings | 2027-03-14 → 2027-03-27 (+13d) | 2027-03-18 → 2027-04-01 (+14d) |  | 54d → 62.54d |
| TAEXTSCU330004 | Backfilling Works for Trench | 2027-03-20 → 2027-04-01 (+12d) | 2027-04-01 → 2027-04-15 (+14d) |  | 89d → 77.04d |
| TAEXTSCU330005 | Install Valves with fittings | 2027-03-29 → 2027-04-11 (+13d) | 2027-04-01 → 2027-04-15 (+14d) |  | 89d → 77.04d |
| TAEXTSCU330006 | Valve Chamber works | 2027-04-03 → 2027-04-15 (+12d) | 2027-04-19 → 2027-05-03 (+14d) |  | 89d → 77.04d |
| TAEXTSCU330007 | Inspection Test | 2027-04-20 → 2027-05-03 (+13d) | 2027-04-22 → 2027-05-06 (+14d) |  | 89d → 77.04d |
| 4 | **Sewerage Networks** | 2027-06-20 → 2026-09-20 (-273d) | 2027-07-27 → 2027-02-27 (-150d) |  |  |
| TAEXSWCU330001 | Excavation works for Trench | 2027-06-20 → 2026-09-20 A (-273d) | 2027-06-30 → 2027-02-07 (-143d) | 0% → 67% | 2d → 131.03d |
| TAEXSWCU330002 | Bedding Works | 2027-07-01 → 2026-10-03 A (-271d) | 2027-07-03 → 2027-02-08 (-145d) | 0% → 65% | 2d → 131.03d |
| TAEXSWCU330003 | Install GRP Pipes & Fittings | 2027-07-04 → 2026-10-04 A (-273d) | 2027-07-11 → 2027-02-10 (-151d) | 0% → 65% | 2d → 131.03d |
| TAEXSWCU330004 | Backfilling Works for Trench | 2027-06-28 → 2027-01-27 (-152d) | 2027-07-11 → 2027-02-10 (-151d) |  | 13d → 142.03d |

| ID | Task | Start | Finish | Complete | Total float | Predecessors | Other |
| --- | --- | --- | --- | --- | --- | --- | --- |
| TAEXSWCU330005 | Manhole Installation with backfilling | 2027-07-12 → 2027-02-10 (-152d) | 2027-07-24 → 2027-02-23 (-151d) |  | 2d → 131.03d |  |  |
| TAEXSWCU330006 | Leakage Test | 2027-07-25 → 2027-02-23 (-152d) | 2027-07-27 → 2027-02-27 (-150d) |  | 2d → 131.03d |  |  |
| 5 | **Storm Networks** | 2027-03-11 → 2027-04-29 (+49d) | 2027-05-23 → 2027-07-12 (+50d) |  |  |  |  |
| TAEXSTCU330001 | Excavation works for Trench | 2027-03-11 → 2027-04-29 (+49d) | 2027-03-29 → 2027-05-18 (+50d) |  | 50d → 7.64d |  |  |
| TAEXSTCU330002 | Bedding Works | 2027-03-30 → 2027-05-18 (+49d) | 2027-03-31 → 2027-05-20 (+50d) |  | 57d → 14.64d |  |  |
| TAEXSTCU330003 | Install GRP Pipes & Fittings | 2027-04-01 → 2027-05-20 (+49d) | 2027-04-08 → 2027-05-29 (+51d) |  | 57d → 14.64d |  |  |
| TAEXSTCU330004 | Backfilling Works for Trench | 2027-04-13 → 2027-06-01 (+49d) | 2027-04-26 → 2027-06-15 (+50d) |  | 57d → 14.64d |  |  |
| TAEXSTCU330005 | Manhole Installation with backfilling | 2027-04-26 → 2027-06-14 (+49d) | 2027-05-08 → 2027-06-27 (+50d) |  | 57d → 14.64d |  |  |
| TAEXSTCU330006 | Install Catch Basin with UPVC Pipes & Fittings | 2027-05-09 → 2027-06-27 (+49d) | 2027-05-19 → 2027-07-08 (+50d) |  | 57d → 14.64d |  |  |
| TAEXSTCU330007 | Leakage Test | 2027-05-20 → 2027-07-08 (+49d) | 2027-05-23 → 2027-07-12 (+50d) |  | 70d → 27.64d |  |  |
| 17 | **Pond** |  | 2027-05-23 → 2026-12-16 (-158d) |  |  |  |  |
| 21 | **Storm Water Pond** |  | 2027-05-23 → 2026-12-16 (-158d) |  |  |  |  |
| TAEXSTCSWP0006 | Excavation works for Ponds 6th part | 2026-08-29 → 2026-06-06 A (-84d) | 2026-10-01 → 2026-06-15 A (-108d) | 0% → 100% | 150d → none |  | resources COST [346307]; DUMP TRUCK [960 h]; DUMP TRUCK DRIVER [960 h]; EXCAVATOR [1460 h]; EXCAVATOR OPERATOR [1460 h]; LABOR [160 h] → DUMP TRUCK [960 h]; EXCAVATOR [1460 h]; LABOR [160 h]; DUMP TRUCK DRIVER [960 h]; EXCAVATOR OPERATOR [1460 h]; COST [346307] |
| TAEXSTCSWP00141 | Loose Riprap, for protection Part 01 | 2027-05-06 → 2026-06-17 A (-323d) | 2027-05-23 → 2026-09-22 A (-243d) | 0% → 100% | 89d → none |  |  |
| TAEXSTCSWP0007 | Excavation works for ponds 7th part | 2026-10-03 → 2026-06-18 A (-107d) | 2026-11-23 → 2026-10-20 (-34d) | 0% → 95% | 150d → 225.75d |  | resources COST [746307]; DUMP TRUCK [240 h]; DUMP TRUCK DRIVER [240 h]; EXCAVATOR [365 h]; EXCAVATOR OPERATOR [365 h]; LABOR [40 h] → DUMP TRUCK [240 h]; EXCAVATOR [365 h]; LABOR [40 h]; DUMP TRUCK DRIVER [240 h]; EXCAVATOR OPERATOR [365 h]; COST [746307] |
| TAEXSTCSWP0009 | Riprap Works part 1 | 2027-02-03 → 2026-06-21 A (-227d) | 2027-02-16 → 2026-10-22 (-117d) | 0% → 95% | 89d → 224.6d |  |  |
| TAEXSTCSWP0012 | Outfall structure works | 2027-04-13 → 2026-07-05 A (-282d) | 2027-05-05 → 2026-12-16 (-140d) | 0% → 15% | 89d → 224.6d |  |  |
| TAEXSTCSWP0010 | Riprap Works Part 2 | 2027-02-17 → 2026-08-08 A (-193d) | 2027-03-11 → 2026-10-26 (-136d) | 0% → 85% | 89d → 224.6d |  |  |
| TAEXSTCSWP0011 | Sand Marl Mix Ballast layer | 2027-03-13 → 2026-10-26 (-138d) | 2027-03-25 → 2026-11-09 (-136d) |  | 89d → 224.6d |  |  |
| 22 | **CLOSE OUT** | 2027-04-17 → 2027-02-14 (-62d) | 2027-09-03 → 2027-10-02 (+29d) |  |  |  |  |
| 3 | **Final Testing and Commmisionning** | 2027-04-17 → 2027-02-14 (-62d) | 2027-09-03 → 2027-09-06 (+3d) |  |  |  |  |
| 1 | **Final Test & commisionning Zone 1** | 2027-05-01 → 2027-03-08 (-54d) | 2027-06-28 → 2027-06-26 (-2d) |  |  |  |  |
| TACOFTFT0006 | TSE Networks | 2027-06-24 → 2027-03-08 (-108d) | 2027-06-28 → 2027-03-13 (-107d) |  | 48d → 140.78d |  |  |
| TACOFTFT0007 | Sewerage Networks | 2027-06-08 → 2027-03-08 (-92d) | 2027-06-14 → 2027-03-15 (-91d) |  | 60d → 138.78d |  |  |
| TACOFTFT0008 | Storm Water Drainage Networks | 2027-06-12 → 2027-03-08 (-96d) | 2027-06-19 → 2027-03-16 (-95d) |  | 52d → 133.37d |  |  |
| TACOFTFT0005 | Potable Water Networks | 2027-06-20 → 2027-04-04 (-77d) | 2027-06-23 → 2027-04-08 (-76d) |  | 52d → 117.44d |  |  |
| TACOFTFT0003 | Telecommunications Networks | 2027-05-01 → 2027-05-25 (+24d) | 2027-05-04 → 2027-05-30 (+26d) |  | 89d → 67.05d |  |  |
| TACOFTFT0004 | CCTV Networks | 2027-05-12 → 2027-05-31 (+19d) | 2027-05-19 → 2027-06-08 (+20d) |  | 82d → 65.45d |  |  |
| TACOFTFT0002 | Electrical NetWorks | 2027-06-01 → 2027-06-08 (+7d) | 2027-06-08 → 2027-06-16 (+8d) |  | 59d → 52.1d |  |  |
| TACOFTFT0001 | Road Works | 2027-06-09 → 2027-06-21 (+12d) | 2027-06-13 → 2027-06-26 (+13d) |  | 36d → 25.1d |  |  |
| 2 | **Final Test & commisionning Zone 2** | 2027-04-17 → 2027-02-14 (-62d) | 2027-08-24 → 2027-08-25 (+1d) |  |  |  |  |
| TACOFTFT0015 | Sewerage Networks | 2027-04-17 → 2027-02-14 (-62d) | 2027-04-22 → 2027-02-21 (-60d) |  | 84d → 136.51d |  |  |
| TACOFTFT0013 | Potable Water Networks | 2027-07-08 → 2027-03-16 (-114d) | 2027-07-12 → 2027-03-21 (-113d) |  | 41d → 138.13d |  |  |
| TACOFTFT0014 | TSE Networks | 2027-07-13 → 2027-03-25 (-110d) | 2027-07-17 → 2027-03-30 (-109d) |  | 39d → 132.78d |  |  |
| TACOFTFT0016 | Storm Water Drainage Networks | 2027-06-26 → 2027-03-28 (-90d) | 2027-07-03 → 2027-04-05 (-89d) |  | 35d → 111.53d |  |  |
| TACOFTFT0010 | Electrical NetWorks | 2027-04-26 → 2027-05-25 (+29d) | 2027-05-03 → 2027-06-02 (+30d) |  | 77d → 51.05d |  |  |
| TACOFTFT0011 | Telecommunications Networks | 2027-06-07 → 2027-06-14 (+7d) | 2027-06-14 → 2027-06-22 (+8d) |  | 40d → 33.73d |  |  |
| TACOFTFT0009 | Road Works | 2027-07-26 → 2027-07-18 (-8d) | 2027-08-02 → 2027-07-26 (-7d) |  | 0d → 6.08d |  |  |
| TACOFTFT0012 | CCTV Networks |  | 2027-08-24 → 2027-08-25 (+1d) |  | 0d → -0.55d | TAEXCCCC010004, TAEXCCCU280004, TAEXCCCL020004, TAEXCCCL030004, TAEXCCCL040004, TAEXCCCL050004 FS+4d → TAEXCCCC010004, TAEXCCCU280004, TAEXCCCL020004, TAEXCCCL030004, TAEXCCCL040004, TAEXCCCL050004 FS+1d |  |
| 3 | **Final Test & commisionning Zone 3** | 2027-07-04 → 2027-02-28 (-126d) | 2027-09-03 → 2027-09-06 (+3d) |  |  |  |  |
| TACOFTFT0023 | Sewerage Networks | 2027-07-28 → 2027-02-28 (-150d) | 2027-08-02 → 2027-03-06 (-149d) |  | 2d → 130.96d |  |  |
| TACOFTFT0021 | Potable Water Networks | 2027-08-16 → 2027-05-29 (-79d) | 2027-08-21 → 2027-06-03 (-79d) |  | 12d → 79.36d |  |  |
| TACOFTFT0022 | TSE Networks | 2027-07-19 → 2027-05-31 (-49d) | 2027-07-21 → 2027-06-03 (-48d) |  | 38d → 79.67d |  |  |
| TACOFTFT0017 | Road Works | 2027-08-03 → 2027-07-31 (-3d) | 2027-08-05 → 2027-08-03 (-2d) |  | 0d → 2.35d |  |  |
| TACOFTFT0024 | Storm Water Drainage Networks | 2027-07-04 → 2027-08-04 (+31d) | 2027-07-11 → 2027-08-12 (+32d) |  | 35d → 7.64d |  |  |
| TACOFTFT0019 | Telecommunications Networks | 2027-08-01 → 2027-08-10 (+9d) | 2027-08-08 → 2027-08-18 (+10d) |  | 0d → -8.27d |  |  |
| TACOFTFT0020 | CCTV Networks |  | 2027-09-03 → 2027-09-04 (+1d) |  | 0d → -0.55d | TAEXCCCL010004, TAEXCCCL060004, TAEXCCCL070004, TAEXCCCL080004, TAEXCCCL090004, TAEXCCCU060004, TAEXCCCU070004, TAEXCCCU080004, TAEXCCCU090004, TAEXCCCU120004, TAEXCCCU140004, TAEXCCCU180004 FS+12d, TAEXCCCU200004, TAEXCCCU290004, TAEXCCCU330004, TACOFTFT0012 → TAEXCCCL010004, TAEXCCCL060004, TAEXCCCL070004, TAEXCCCL080004, TAEXCCCL090004, TAEXCCCU060004, TAEXCCCU070004, TAEXCCCU080004, TAEXCCCU090004, TAEXCCCU120004, TAEXCCCU140004, TAEXCCCU180004 FS+2d, TAEXCCCU200004, TAEXCCCU290004, TAEXCCCU330004, TACOFTFT0012 |  |
| TACOFTFT0018 | Electrical NetWorks | 2027-08-02 → 2027-08-30 (+28d) | 2027-08-09 → 2027-09-06 (+28d) |  | 0d → -24.67d |  |  |
| 2 | **AS BUILT DRAWINGS** | 2027-07-19 → 2027-03-02 (-139d) | 2027-08-16 → 2027-09-13 (+28d) |  |  |  |  |
| 1 | **AS BUILT DRAWINGS Zone 1** | 2027-07-19 → 2027-03-08 (-133d) | 2027-08-16 → 2027-09-13 (+28d) |  |  |  |  |
| TACOFTAD0007 | Sewerage Networks | 2027-08-03 → 2027-03-08 (-148d) | 2027-08-14 → 2027-03-20 (-147d) |  | 2d → 128.78d |  |  |
| TACOFTAD0005 | Potable Water Networks | 2027-08-04 → 2027-05-17 (-79d) | 2027-08-15 → 2027-05-29 (-78d) |  | 1d → 68.36d |  |  |
| TACOFTAD0006 | TSE Networks | 2027-07-19 → 2027-05-24 (-56d) | 2027-07-29 → 2027-06-05 (-54d) |  | 15d → 62.54d |  |  |
| TACOFTAD0008 | Storm Water Drainage Networks | 2027-08-03 → 2027-07-24 (-10d) | 2027-08-14 → 2027-08-04 (-10d) |  | 2d → 10.64d |  |  |
| TACOFTAD0001 | Road Works | 2027-08-07 → 2027-08-03 (-4d) | 2027-08-09 → 2027-08-07 (-2d) |  | 0d → 2.35d |  |  |
| TACOFTAD0004 | CCTV Networks | 2027-08-12 → 2027-08-17 (+5d) | 2027-08-16 → 2027-08-22 (+6d) |  | 0d → -4.27d |  |  |
| TACOFTAD0003 | Telecommunications Networks | 2027-08-09 → 2027-08-18 (+9d) | 2027-08-16 → 2027-08-26 (+10d) |  | 0d → -8.27d |  |  |
| TACOFTAD0002 | Electrical NetWorks | 2027-08-10 → 2027-09-06 (+27d) | 2027-08-16 → 2027-09-13 (+28d) |  | 0d → -24.67d |  |  |
| 2 | **AS BUILT DRAWINGS Zone 2** | 2027-07-19 → 2027-03-02 (-139d) | 2027-08-16 → 2027-09-13 (+28d) |  |  |  |  |
| TACOFTAD0015 | Sewerage Networks | 2027-07-28 → 2027-03-02 (-148d) | 2027-08-14 → 2027-03-20 (-147d) |  | 2d → 128.78d |  |  |
| TACOFTAD0013 | Potable Water Networks | 2027-08-04 → 2027-05-17 (-79d) | 2027-08-15 → 2027-05-29 (-78d) |  | 1d → 68.36d |  |  |
| TACOFTAD0014 | TSE Networks | 2027-07-19 → 2027-05-24 (-56d) | 2027-07-29 → 2027-06-05 (-54d) |  | 15d → 62.54d |  |  |
| TACOFTAD0016 | Storm Water Drainage Networks | 2027-07-28 → 2027-07-18 (-10d) | 2027-08-14 → 2027-08-04 (-10d) |  | 2d → 10.64d |  |  |
| TACOFTAD0009 | Road Works | 2027-08-10 → 2027-08-07 (-3d) | 2027-08-12 → 2027-08-10 (-2d) |  | 0d → 2.35d |  |  |
| TACOFTAD0012 | CCTV Networks | 2027-08-12 → 2027-08-17 (+5d) | 2027-08-16 → 2027-08-22 (+6d) |  | 0d → -4.27d |  |  |
| TACOFTAD0011 | Telecommunications Networks | 2027-08-09 → 2027-08-18 (+9d) | 2027-08-16 → 2027-08-26 (+10d) |  | 0d → -8.27d |  |  |
| TACOFTAD0010 | Electrical NetWorks | 2027-08-09 → 2027-09-05 (+27d) | 2027-08-16 → 2027-09-13 (+28d) |  | 0d → -24.67d |  |  |
| 3 | **AS BUILT DRAWINGS Zone 3** | 2027-07-19 → 2027-03-08 (-133d) | 2027-08-16 → 2027-09-13 (+28d) |  |  |  |  |
| TACOFTAD0023 | Sewerage Networks | 2027-08-03 → 2027-03-08 (-148d) | 2027-08-14 → 2027-03-20 (-147d) |  | 2d → 128.78d |  |  |
| TACOFTAD0021 | Potable Water Networks | 2027-08-04 → 2027-05-17 (-79d) | 2027-08-15 → 2027-05-29 (-78d) |  | 1d → 68.36d |  |  |

| ID | Task | Start | Finish | Total float |
| --- | --- | --- | --- | --- |
| TACOFTAD0022 | TSE Networks | 2027-07-19 → 2027-05-24 (-56d) | 2027-07-29 → 2027-06-05 (-54d) | 15d → 62.54d |
| TACOFTAD0024 | Storm Water Drainage Networks | 2027-08-03 → 2027-07-24 (-10d) | 2027-08-14 → 2027-08-04 (-10d) | 2d → 10.64d |
| TACOFTAD0017 | Road Works | 2027-08-14 → 2027-08-10 (-4d) | 2027-08-16 → 2027-08-14 (-2d) | 0d → 2.35d |
| TACOFTAD0020 | CCTV Networks | 2027-08-11 → 2027-08-16 (+5d) | 2027-08-16 → 2027-08-22 (+6d) | 0d → -4.27d |
| TACOFTAD0019 | Telecommunications Networks | 2027-08-09 → 2027-08-18 (+9d) | 2027-08-16 → 2027-08-26 (+10d) | 0d → -8.27d |
| TACOFTAD0018 | Electrical NetWorks | 2027-08-09 → 2027-09-05 (+27d) | 2027-08-16 → 2027-09-13 (+28d) | 0d → -24.67d |
| 1 | **DEMOBILIZATION** | 2027-08-17 → 2027-09-13 (+27d) | 2027-09-03 → 2027-10-02 (+29d) |  |
| TAPCDZ00000001 | Demobilization Manpower | 2027-08-17 → 2027-09-13 (+27d) | 2027-08-23 → 2027-09-20 (+28d) | 0d → -24.67d |
| TAPCDZ00000002 | Remove Offices and Structures | 2027-08-24 → 2027-09-20 (+27d) | 2027-08-29 → 2027-09-26 (+28d) | 0d → -24.67d |
| TAPCDZ00000022 | Restore Ground Surfaces | 2027-08-29 → 2027-09-25 (+27d) | 2027-09-03 → 2027-10-02 (+29d) | 0d → -24.67d |
| TAPCDZ00000012 | Demobilize Equipment from Site | 2027-08-30 → 2027-09-26 (+27d) | 2027-09-03 → 2027-10-02 (+29d) | 0d → -24.67d |
| TAPCDZ00000032 | Final Handover | 2027-09-03 → 2027-10-02 (+29d) | 2027-09-03 → 2027-10-02 (+29d) | 0d → -24.67d |

## Version 3 (data date 2026-10-12, saved 2026-10-12, file 12-10-2026.xer)

Note of the change: Weekly folders named by the Thursday the week ends on: a report dated after one Thursday up to the next goes in the next Thursday's folder (26-Oct → W05 - 29-Oct-2026); all weeks moved accordingly, W00 removed

Last finish 2027-10-02 → 2027-10-03 (+1d). Complete tasks 564 → 575.

Changed:

| ID | Task | Start | Finish | Complete | Total float |
| --- | --- | --- | --- | --- | --- |
| GENERAL | **MILESTONS** |  | 2027-10-02 → 2027-10-03 (+1d) |  |  |
| 2 | **CONTRACTUAL MILESTONES** |  | 2027-10-02 → 2027-10-03 (+1d) |  |  |
| TAGNCM0003 | Project finish | 2027-10-02 → 2027-10-03 (+1d) | 2027-10-02 → 2027-10-03 (+1d) |  | -24.67d → -25.1d |
| 1 | **NET WORK MILESTONES** |  | 2027-10-02 → 2027-10-03 (+1d) |  |  |
| TAGNML0008 | Start CCTV Works | 2026-10-05 → 2026-10-12 (+7d) | 2026-10-05 → 2026-10-12 (+7d) |  | 4d → -2d |
| TAGNML0019 | Finish Sewerage Networks | 2027-03-20 → 2027-03-24 (+4d) | 2027-03-20 → 2027-03-24 (+4d) |  | 144.78d → 140.96d |
| TAGNML0018 | Finish TSE Networks | 2027-06-03 → 2027-06-09 (+6d) | 2027-06-03 → 2027-06-09 (+6d) |  | 79.67d → 74.55d |
| TAGNML0020 | Finish Storm Water Drainage Networks | 2027-08-04 → 2027-08-05 (+1d) | 2027-08-04 → 2027-08-05 (+1d) |  | 26.64d → 25.64d |
| TAGNML0032 | Finish works for Amana Road | 2027-08-16 → 2027-08-19 (+3d) | 2027-08-16 → 2027-08-19 (+3d) |  | 16.08d → 13.32d |
| TAGNML0015 | Finish Teleommunications Works | 2027-08-26 → 2027-09-02 (+7d) | 2027-08-26 → 2027-09-02 (+7d) |  | 7.73d → 1.73d |
| TAGNML0016 | Finish CCTV Works | 2027-09-04 → 2027-09-11 (+7d) | 2027-09-04 → 2027-09-11 (+7d) |  | -0.55d → -6.55d |
| TAGNML0014 | Finish Electrical Works | 2027-10-02 → 2027-09-29 (-3d) | 2027-10-02 → 2027-09-29 (-3d) |  | -24.62d → -22.22d |
| TAGNML0013 | Finish Road Works | 2027-09-29 → 2027-10-03 (+4d) | 2027-09-29 → 2027-10-03 (+4d) |  | -22.81d → -25.1d |
| 4 | **ZONES MILESTONES** |  | 2027-07-18 → 2027-07-21 (+3d) |  |  |
| TAGNZM0004 | Finish Zone 1 | 2027-06-21 → 2027-06-27 (+6d) | 2027-06-21 → 2027-06-27 (+6d) |  | 64.1d → 59.86d |
| TAGNZM0005 | Finish Zone 2 | 2027-07-18 → 2027-07-21 (+3d) | 2027-07-18 → 2027-07-21 (+3d) |  | 16.08d → 13.32d |
| 3 | **PRELIMINARY SUBMITTALS** |  | 2026-11-03 → 2026-11-10 (+7d) |  |  |
| TAGNPS0002 | Shop drawing complete |  | 2026-11-03 → 2026-11-10 (+7d) |  | 11.54d → 10.79d |
| 5 | **MOBILIZATION** |  | 2027-08-30 → 2027-08-24 (-6d) |  |  |
| 2 | **Site Facilites and Offices** |  | 2027-08-30 → 2027-08-24 (-6d) |  |  |
| TAGNMZ9 | Office Operation part 01 |  | 2027-08-30 → 2027-08-24 (-6d) | 26% → 29% | -6d → -0.01d |
| 17 | **PROCUREMENT** |  | 2027-09-29 → 2027-10-03 (+4d) |  |  |
| 17 | **Material Fabrication and Delivery** |  | 2027-09-29 → 2027-10-03 (+4d) |  |  |
| 1 | **Material Fabrication and Delivery for Road Works** |  | 2027-09-29 → 2027-10-03 (+4d) |  |  |
| TAPQDVRD00011 | ABC Delivery to Site Part 01 |  | 2026-11-16 → 2026-11-22 (+6d) | 49% → 50% | -24.67d → -25.1d |
| TAPQDVRD00021 | BBC Base Course Delivery to Site Part 01 |  | 2027-07-06 → 2027-07-10 (+4d) | 27% → 29% | 6.08d → 3.32d |
| TAPQDVRD00041 | Precast Concrete Curbstone Delivery to Site part 01 |  | 2027-07-18 → 2027-07-21 (+3d) | 9% → 14% | -22.81d → -25.1d |
| TAPQDVRD0003 | BWC Asphalt Wearing Course Delivery to Site | 2027-07-06 → 2027-07-10 (+4d) | 2027-08-16 → 2027-08-19 (+3d) |  | 7.08d → 4.32d |
| TAPQDVRD00081 | Marking for Road delivery to site Part 01 | 2027-07-06 → 2027-07-10 (+4d) | 2027-07-12 → 2027-07-15 (+3d) |  | 6.08d → 3.32d |
| TAPQDVRD0005 | Precast Concrete Interlocking Delivery to Site | 2027-08-15 → 2027-08-18 (+3d) | 2027-09-29 → 2027-10-03 (+4d) |  | -22.81d → -25.1d |
| TAPQDVRD00091 | Trafic Sinage delivery to site Part 01 | 2027-08-16 → 2027-08-19 (+3d) | 2027-08-26 → 2027-08-30 (+4d) |  | 7.08d → 4.32d |
| 10 | **Material Fabrication and Delivery for Electrical Works** |  | 2027-03-31 → 2027-04-07 (+7d) |  |  |
| TAPQDVEL0002 | cables (LV,MV )Delivery to Site) |  | 2026-12-16 → 2026-12-23 (+7d) |  | -8.27d → -14.27d |
| TAPQDVEL00011 | Pipes ,Fittings Delivery to Site Part 01 |  | 2026-10-07 → 2026-10-14 (+7d) |  | -8.27d → -14.27d |
| TAPQDVEL0003 | Poles & Luminares Delivery to Site | 2026-12-16 → 2026-12-23 (+7d) | 2027-02-24 → 2027-03-03 (+7d) |  | -8.27d → -14.27d |
| TAPQDVEL0005 | Pre cast Drawpits and Pole Foundation Delivery | 2027-02-13 → 2027-02-20 (+7d) | 2027-03-31 → 2027-04-07 (+7d) |  | -8.27d → -14.27d |
| 11 | **Material Fabrication and Delivery for Telecommunication** |  | 2026-10-13 → 2026-10-20 (+7d) |  |  |
| TAPQDVTC0001 | Telecommunication Material (Pipes,,ets) Delivery |  | 2026-10-13 → 2026-10-20 (+7d) |  | -5.61d → -11.61d |
| 12 | **Material Fabrication and Delivery for CCTV Networks** |  | 2026-11-17 → 2026-11-24 (+7d) |  |  |
| TAPQDVCC0001 | CCTV Material Cabls,Camera,Devices,ets) Delivery |  | 2026-11-17 → 2026-11-24 (+7d) |  | -3.55d → -9.55d |
| 15 | **Material Fabrication and Delivery for Sewerage Networks** |  | 2026-11-22 → 2026-11-29 (+7d) |  |  |
| TAPQDVSW00011 | GRP Pipes Delivery to Site Part 01 |  | 2026-10-12 → 2026-10-19 (+7d) |  | 7.24d → 8.84d |
| TAPQDVSW00021 | Fiberglass Manholes,ets) Delivery Part 01 | 2026-10-12 → 2026-10-19 (+7d) | 2026-11-22 → 2026-11-29 (+7d) |  | 7.24d → 8.84d |
| 16 | **Material Fabrication and Delivery for Storm Networks** |  | 2026-11-28 → 2026-12-05 (+7d) |  |  |
| TAPQDVST00051 | Box Culvert Delivery part 01 |  | 2026-11-07 → 2026-11-14 (+7d) |  | 2.35d → 3.95d |
| TAPQDVST0009 | Catchbasin Delivery to Site |  | 2026-10-18 → 2026-10-25 (+7d) |  | 43.49d → 45.09d |
| TAPQDVST00061 | Manholes,ets Delivery part 01 |  | 2026-11-28 → 2026-12-05 (+7d) |  | 2.35d → 3.95d |
| TAPQDVST00041 | GRP Pipes with Fittings Delivery Part 4 |  | 2026-10-13 → 2026-10-20 (+7d) |  | 2.35d → 3.95d |
| 1 | **CONSTRUCTION WORKS** |  | 2027-10-02 → 2027-09-29 (-3d) |  |  |
| 9 | **ZONE 1** |  | 2027-10-02 → 2027-09-29 (-3d) |  |  |
| 1 | **Collector Road 02** |  | 2027-06-21 → 2027-06-27 (+6d) |  |  |
| 10 | **Road Works** |  | 2027-06-21 → 2027-06-27 (+6d) |  |  |
| TAEXRDCC020004 | ABC aggregate Base Course Works |  | 2027-04-28 → 2027-05-04 (+6d) |  | 6.08d → 3.32d |
| TAEXRDCC020005 | MBC1 layer |  | 2027-04-29 → 2027-05-05 (+6d) |  | 6.08d → 3.32d |
| TAEXRDCC020006 | BBC Base Course | 2027-04-29 → 2026-10-11 A (-200d) | 2027-05-04 → 2027-05-10 (+6d) | 0% → 9% | 6.08d → 3.32d |
| TAEXRDCC0200021 | Backfilling Works for Road Part 01 | 2027-03-25 → 2027-03-31 (+6d) | 2027-04-04 → 2027-04-10 (+6d) |  | 6.08d → 3.32d |
| TAEXRDCC0200031 | Subgrade Works Part 01 | 2027-04-04 → 2027-04-10 (+6d) | 2027-04-13 → 2027-04-19 (+6d) |  | 6.08d → 3.32d |
| TAEXRDCC020008 | Precast Concret Kerps | 2027-05-04 → 2027-05-10 (+6d) | 2027-05-17 → 2027-05-23 (+6d) |  | 21.1d → 16.86d |
| TAEXRDCC020007 | BWC Asphalt Wearing Course with RC | 2027-05-17 → 2027-05-23 (+6d) | 2027-05-19 → 2027-05-25 (+6d) |  | 25.1d → 20.86d |
| TAEXRDCC020009 | Precast Interlock Works | 2027-05-19 → 2027-05-25 (+6d) | 2027-06-09 → 2027-06-15 (+6d) |  | 25.1d → 20.86d |
| TAEXRDCC020010 | Stone Paving works | 2027-06-09 → 2027-06-15 (+6d) | 2027-06-17 → 2027-06-23 (+6d) |  | 25.1d → 20.86d |
| TAEXRDCC020011 | Road Marking | 2027-06-17 → 2027-06-23 (+6d) | 2027-06-20 → 2027-06-26 (+6d) |  | 25.1d → 20.86d |
| TAEXRDCC020012 | Traffic Sinage | 2027-06-20 → 2027-06-26 (+6d) | 2027-06-21 → 2027-06-27 (+6d) |  | 25.1d → 20.86d |
| 11 | **Electrical Works** |  | 2027-04-21 → 2027-04-28 (+7d) |  |  |
| TAEXELCC020003 | Road Crossing Ducts |  | 2027-02-23 → 2027-03-01 (+6d) |  | 6.08d → 3.32d |
| TAEXELCC020002 | Drawpit and PVC Pipes Installation |  | 2027-02-21 → 2027-02-27 (+6d) | 50% → 60% | 6.08d → 3.32d |
| TAEXELCC020001 | Trench Cut off | 2026-11-28 → 2026-12-03 (+5d) | 2026-12-21 → 2026-12-27 (+6d) |  | 52.82d → 50.77d |
| TAEXELCC020004 | Trench Backfilling | 2027-02-23 → 2027-03-01 (+6d) | 2027-03-16 → 2027-03-22 (+6d) |  | 6.08d → 3.32d |
| TAEXELCC020005 | Cables Pulling | 2027-03-16 → 2027-03-22 (+6d) | 2027-03-25 → 2027-03-31 (+6d) |  | 6.08d → 3.32d |
| TAEXELCC020006 | Poles RC Foundation | 2027-03-31 → 2027-04-07 (+7d) | 2027-04-07 → 2027-04-14 (+7d) |  | 56.05d → 50.05d |

| ID | Task | Start | Finish | Complete | Total float |
| --- | --- | --- | --- | --- | --- |
| TAEXELCC020007 | Earthing cables | 2027-04-07 → 2027-04-14 (+7d) | 2027-04-19 → 2027-04-26 (+7d) |  | 56.05d → 50.05d |
| TAEXELCC020008 | Lighting Pole Installation with Luminares | 2027-04-07 → 2027-04-14 (+7d) | 2027-04-21 → 2027-04-28 (+7d) |  | 63.05d → 57.05d |
| 12 | **Telecommunication Works** |  | 2027-04-28 → 2027-05-05 (+7d) |  |  |
| TAEXTCCC020002 | Drawpit and PVC Pipes Installation |  | 2027-04-05 → 2027-04-12 (+7d) |  | -8.27d → -14.27d |
| TAEXTCCC020003 | Road Crossing Ducts |  | 2027-04-07 → 2027-04-14 (+7d) |  | 87.05d → 81.05d |
| TAEXTCCC020001 | Trench Cut off | 2026-10-07 → 2026-10-14 (+7d) | 2026-10-31 → 2026-11-07 (+7d) |  | -5.61d → -11.61d |
| TAEXTCCC020004 | Trench Backfilling | 2027-04-07 → 2027-04-14 (+7d) | 2027-04-28 → 2027-05-05 (+7d) |  | 87.05d → 81.05d |
| 13 | **CCTV Works** | 2027-02-11 → 2027-02-18 (+7d) | 2027-04-22 → 2027-04-29 (+7d) |  |  |
| TAEXCCCC020001 | Pipe Installation with manhole | 2027-02-11 → 2027-02-18 (+7d) | 2027-02-23 → 2027-03-02 (+7d) |  | -3.55d → -9.55d |
| TAEXCCCC020002 | CCTV Swiches Lighting panels Installation | 2027-02-23 → 2027-03-02 (+7d) | 2027-03-16 → 2027-03-23 (+7d) |  | -3.55d → -9.55d |
| TAEXCCCC020003 | Cable laying and connected with Panels | 2027-03-16 → 2027-03-23 (+7d) | 2027-04-01 → 2027-04-08 (+7d) |  | 95.45d → 89.45d |
| TAEXCCCC020004 | Pole Installation with IP Outdoor CCTV POE Camera | 2027-04-01 → 2027-04-08 (+7d) | 2027-04-22 → 2027-04-29 (+7d) |  | 95.45d → 89.45d |
| 14 | **Potable Networks** |  | 2027-02-20 → 2027-02-23 (+3d) |  |  |
| TAEXPTCC020005 | Install Valves with fittings |  | 2027-02-13 → 2027-02-16 (+3d) |  | 122.9d → 120.13d |
| TAEXPTCC020007 | Valve Chamber works |  | 2027-02-20 → 2026-10-10 A (-133d) | 95% → 100% | 117.13d → none |
| TAEXPTCC020006 | Install fire hydrent |  | 2027-02-20 → 2027-02-23 (+3d) |  | 117.13d → 114.36d |
| 15 | **TSE Networks** |  | 2026-12-30 → 2027-01-04 (+5d) |  |  |
| TAEXTSCC020006 | Valve Chamber works |  | 2026-12-30 → 2026-10-10 A (-81d) | 95% → 100% | 186.86d → none |
| TAEXTSCC020005 | Install Valves with fittings |  | 2026-12-29 → 2027-01-04 (+6d) |  | 186.86d → 182.01d |
| 16 | **Sewerage Networks** |  | 2027-02-14 → 2027-02-02 (-12d) |  |  |
| TAEXSWCC0200051 | Manhole Installation with backfilling Part 01 |  | 2027-02-13 → 2026-10-10 A (-126d) | 95% → 100% | 133.37d → none |
| TAEXSWCC0200061 | Leakage Test Part 01 |  | 2027-02-14 → 2027-02-02 (-12d) | 90% → 95% | 133.37d → 145.66d |
| TAEXSWCC0200041 | Backfilling Works for Trench Part 01 | 2027-01-19 → 2026-10-07 A (-104d) | 2027-01-26 → 2026-10-10 A (-108d) | 0% → 100% | 133.37d → none |
| 17 | **Storm Networks** |  | 2027-01-26 → 2027-02-02 (+7d) |  |  |
| TAEXSTCC0200051 | Manhole Installation with backfilling Part 01 |  | 2026-11-28 → 2026-10-10 A (-49d) | 95% → 100% | 79.89d → none |
| TAEXSTCC020006 | Install Catch Basin with UPVC Pipes & Fittings |  | 2027-01-26 → 2027-02-02 (+7d) |  | 31.19d → 26.67d |
| 2 | **Collector Road 03** |  | 2027-06-08 → 2027-06-14 (+6d) |  |  |
| 10 | **Road Works** |  | 2027-06-01 → 2027-06-07 (+6d) |  |  |
| TAEXRDCC030007 | BWC Asphalt Wearing Course with RC | 2027-05-17 → 2027-05-23 (+6d) | 2027-05-19 → 2027-05-25 (+6d) |  | 34.1d → 29.86d |
| TAEXRDCC030009 | Precast Interlock Works | 2027-05-19 → 2027-05-25 (+6d) | 2027-05-26 → 2027-06-01 (+6d) |  | 42.1d → 37.86d |
| TAEXRDCC030010 | Stone Paving works | 2027-05-26 → 2027-06-01 (+6d) | 2027-05-29 → 2027-06-03 (+5d) |  | 42.1d → 37.86d |
| TAEXRDCC030011 | Road Marking | 2027-05-29 → 2027-06-03 (+5d) | 2027-05-30 → 2027-06-05 (+6d) |  | 42.1d → 37.86d |
| TAEXRDCC030012 | Traffic Sinage | 2027-05-30 → 2027-06-05 (+6d) | 2027-06-01 → 2027-06-07 (+6d) |  | 42.1d → 37.86d |
| 1 | **Electrical Works** |  | 2027-06-08 → 2027-06-14 (+6d) |  |  |
| TAEXELCC0300011 | Trench Cut off Part 01 | 2026-11-16 → 2026-11-22 (+6d) | 2026-11-28 → 2026-12-03 (+5d) |  | -24.67d → -24.71d |
| TAEXELCC030005 | Cables Pulling | 2027-05-17 → 2027-05-23 (+6d) | 2027-05-22 → 2027-05-27 (+5d) |  | 21.1d → 16.86d |
| TAEXELCC0300041 | Trench Backfilling Part 01 | 2027-05-22 → 2027-05-27 (+5d) | 2027-05-26 → 2027-06-01 (+6d) |  | 21.1d → 16.86d |
| TAEXELCC030006 | Poles RC Foundation | 2027-05-26 → 2027-06-01 (+6d) | 2027-05-30 → 2027-06-05 (+6d) |  | 21.1d → 16.86d |
| TAEXELCC030007 | Earthing cables | 2027-05-30 → 2027-06-05 (+6d) | 2027-06-01 → 2027-06-07 (+6d) |  | 21.1d → 16.86d |
| TAEXELCC030008 | Lighting Pole Installation with Luminares | 2027-05-30 → 2027-06-05 (+6d) | 2027-06-08 → 2027-06-14 (+6d) |  | 52.1d → 47.86d |
| 2 | **Telecommunication Works** | 2026-11-23 → 2026-11-30 (+7d) | 2027-04-29 → 2027-05-06 (+7d) |  |  |
| TAEXTCCC030001 | Trench Cut off | 2026-11-23 → 2026-11-30 (+7d) | 2026-12-05 → 2026-12-12 (+7d) |  | -5.61d → -11.61d |
| TAEXTCCC030002 | Drawpit and PVC Pipes Installation | 2027-04-05 → 2027-04-12 (+7d) | 2027-04-13 → 2027-04-20 (+7d) |  | -8.27d → -14.27d |
| TAEXTCCC030003 | Road Crossing Ducts | 2027-04-13 → 2027-04-20 (+7d) | 2027-04-15 → 2027-04-22 (+7d) |  | 86.05d → 80.05d |
| TAEXTCCC030004 | Trench Backfilling | 2027-04-15 → 2027-04-22 (+7d) | 2027-04-29 → 2027-05-06 (+7d) |  | 86.05d → 80.05d |
| 3 | **CCTV Works** | 2026-10-13 → 2026-10-20 (+7d) | 2027-04-20 → 2027-04-27 (+7d) |  |  |
| TAEXCCCC030001 | Pipe Installation with manhole | 2026-10-13 → 2026-10-20 (+7d) | 2026-10-21 → 2026-10-28 (+7d) |  | -3.55d → -9.55d |
| TAEXCCCC030002 | CCTV Swiches Lighting panels Installation | 2027-03-16 → 2027-03-23 (+7d) | 2027-03-30 → 2027-04-06 (+7d) |  | -3.55d → -9.55d |
| TAEXCCCC030003 | Cable laying and connected with Panels | 2027-03-30 → 2027-04-06 (+7d) | 2027-04-08 → 2027-04-15 (+7d) |  | 97.45d → 91.45d |
| TAEXCCCC030004 | Pole Installation with IP Outdoor CCTV POE Camera | 2027-04-08 → 2027-04-15 (+7d) | 2027-04-20 → 2027-04-27 (+7d) |  | 97.45d → 91.45d |
| 8 | **Upgrade local 21** |  | 2027-06-16 → 2027-06-22 (+6d) |  |  |
| 22 | **Road Works** | 2027-05-17 → 2027-05-23 (+6d) | 2027-06-16 → 2027-06-22 (+6d) |  |  |
| TAEXRDCU210002 | Precast Concret Kerps | 2027-05-17 → 2027-05-23 (+6d) | 2027-05-27 → 2027-06-02 (+6d) |  | 29.1d → 24.86d |
| TAEXRDCU210001 | BWC Asphalt Wearing Course with RC | 2027-05-27 → 2027-06-02 (+6d) | 2027-05-29 → 2027-06-03 (+5d) |  | 29.1d → 24.86d |
| TAEXRDCU210003 | Precast Interlock Works | 2027-05-29 → 2027-06-03 (+5d) | 2027-06-06 → 2027-06-12 (+6d) |  | 29.1d → 24.86d |
| TAEXRDCU210004 | Stone Paving works | 2027-06-06 → 2027-06-12 (+6d) | 2027-06-12 → 2027-06-17 (+5d) |  | 29.1d → 24.86d |
| TAEXRDCU210005 | Road Marking | 2027-06-12 → 2027-06-17 (+5d) | 2027-06-13 → 2027-06-19 (+6d) |  | 29.1d → 24.86d |
| TAEXRDCU210006 | Traffic Sinage | 2027-06-13 → 2027-06-19 (+6d) | 2027-06-16 → 2027-06-22 (+6d) |  | 29.1d → 24.86d |
| 13 | **Electrical Works** | 2026-11-28 → 2026-12-03 (+5d) | 2027-06-13 → 2027-06-20 (+7d) |  |  |
| TAEXELCU210001 | Trench Cut off | 2026-11-28 → 2026-12-03 (+5d) | 2026-12-13 → 2026-12-19 (+6d) |  | -24.67d → -24.71d |
| TAEXELCU210002 | Drawpit and PVC Pipes Installation | 2027-04-14 → 2027-04-21 (+7d) | 2027-04-28 → 2027-05-05 (+7d) |  | 20.05d → 14.05d |
| TAEXELCU210003 | Road Crossing Ducts | 2027-04-28 → 2027-05-05 (+7d) | 2027-05-05 → 2027-05-12 (+7d) |  | 20.05d → 14.05d |
| TAEXELCU210006 | Poles RC Foundation | 2027-04-28 → 2027-05-05 (+7d) | 2027-05-08 → 2027-05-15 (+7d) |  | 42.05d → 36.05d |
| TAEXELCU210004 | Trench Backfilling | 2027-05-05 → 2027-05-12 (+7d) | 2027-05-26 → 2027-06-02 (+7d) |  | 20.05d → 14.05d |
| TAEXELCU210008 | Lighting Pole Installation with Luminares | 2027-05-08 → 2027-05-15 (+7d) | 2027-05-19 → 2027-05-26 (+7d) |  | 69.05d → 63.05d |
| TAEXELCU210005 | Cables Pulling | 2027-05-26 → 2027-06-02 (+7d) | 2027-06-02 → 2027-06-09 (+7d) |  | 20.05d → 14.05d |
| TAEXELCU210007 | Earthing cables | 2027-06-02 → 2027-06-09 (+7d) | 2027-06-07 → 2027-06-14 (+7d) |  | 20.05d → 14.05d |
| TAEXELCU210009 | Install Substation & RMU | 2027-06-02 → 2027-06-09 (+7d) | 2027-06-13 → 2027-06-20 (+7d) |  | 49.05d → 43.05d |
| 1 | **Telecommunication Works** | 2026-12-28 → 2027-01-04 (+7d) | 2027-05-25 → 2027-06-01 (+7d) |  |  |
| TAEXTCCU210001 | Trench Cut off | 2026-12-28 → 2027-01-04 (+7d) | 2027-01-13 → 2027-01-20 (+7d) |  | -5.61d → -11.61d |

| ID | Task | Start | Finish | Complete | Total float |
| --- | --- | --- | --- | --- | --- |
| TAEXTCCU210002 | Drawpit and PVC Pipes Installation | 2027-04-13 → 2027-04-20 (+7d) | 2027-04-27 → 2027-05-04 (+7d) |  | -8.27d → -14.27d |
| TAEXTCCU210003 | Road Crossing Ducts | 2027-04-27 → 2027-05-04 (+7d) | 2027-05-04 → 2027-05-11 (+7d) |  | 64.05d → 58.05d |
| TAEXTCCU210004 | Trench Backfilling | 2027-05-04 → 2027-05-11 (+7d) | 2027-05-25 → 2027-06-01 (+7d) |  | 64.05d → 58.05d |
| 10 | **CCTV Works** | 2026-10-21 → 2026-10-28 (+7d) | 2027-05-18 → 2027-05-25 (+7d) |  |  |
| TAEXCCCU210001 | Pipe Installation with manhole | 2026-10-21 → 2026-10-28 (+7d) | 2026-11-07 → 2026-11-14 (+7d) |  | -3.55d → -9.55d |
| TAEXCCCU210002 | CCTV Swiches Lighting panels Installation | 2027-03-30 → 2027-04-06 (+7d) | 2027-04-18 → 2027-04-25 (+7d) |  | -3.55d → -9.55d |
| TAEXCCCU210003 | Cable laying and connected with Panels | 2027-04-18 → 2027-04-25 (+7d) | 2027-05-02 → 2027-05-09 (+7d) |  | 73.45d → 67.45d |
| TAEXCCCU210004 | Pole Installation with IP Outdoor CCTV POE Camera | 2027-05-02 → 2027-05-09 (+7d) | 2027-05-18 → 2027-05-25 (+7d) |  | 73.45d → 67.45d |
| 2 | **Potable Networks** |  | 2027-04-04 → 2027-04-10 (+6d) |  |  |
| TAEXPTCU210001 | Excavation works for Trench |  | 2026-11-03 → 2026-11-07 (+4d) | 69% → 78% | 68.36d → 68.04d |
| TAEXPTCU210005 | Install Valves with fittings |  | 2027-03-03 → 2027-03-10 (+7d) |  | 105.44d → 100.32d |
| TAEXPTCU210007 | Valve Chamber works |  | 2027-03-29 → 2027-04-04 (+6d) |  | 105.44d → 100.32d |
| TAEXPTCU210002 | Bedding Works | 2027-01-07 → 2027-01-14 (+7d) | 2027-01-10 → 2027-01-17 (+7d) |  | 119.44d → 114.32d |
| TAEXPTCU210003 | Install Pipes & Fittings | 2027-01-25 → 2027-02-01 (+7d) | 2027-02-11 → 2027-02-18 (+7d) |  | 106.44d → 101.32d |
| TAEXPTCU210004 | Backfilling Works for Trench | 2027-02-13 → 2027-02-20 (+7d) | 2027-03-03 → 2027-03-10 (+7d) |  | 105.44d → 100.32d |
| TAEXPTCU210006 | Install fire hydrent | 2027-03-03 → 2027-03-10 (+7d) | 2027-03-13 → 2027-03-20 (+7d) |  | 105.44d → 100.32d |
| TAEXPTCU210008 | Inspection Test | 2027-03-29 → 2027-04-04 (+6d) | 2027-04-04 → 2027-04-10 (+6d) |  | 105.44d → 100.32d |
| 3 | **TSE Networks** |  | 2027-03-07 → 2027-03-13 (+6d) |  |  |
| TAEXTSCU210005 | Install Valves with fittings |  | 2027-02-13 → 2027-02-20 (+7d) |  | 115.84d → 110.72d |
| TAEXTSCU210006 | Valve Chamber works |  | 2027-03-01 → 2027-03-07 (+6d) |  | 115.84d → 110.72d |
| TAEXTSCU210001 | Excavation works for Trench | 2026-12-02 → 2026-12-09 (+7d) | 2027-01-05 → 2027-01-12 (+7d) |  | 62.54d → 57.42d |
| TAEXTSCU210002 | Bedding Works | 2027-01-05 → 2027-01-12 (+7d) | 2027-01-07 → 2027-01-14 (+7d) |  | 105.44d → 100.32d |
| TAEXTSCU210003 | Install Pipes & Fittings | 2027-01-07 → 2027-01-14 (+7d) | 2027-01-25 → 2027-02-01 (+7d) |  | 105.44d → 100.32d |
| TAEXTSCU210004 | Backfilling Works for Trench | 2027-01-25 → 2027-02-01 (+7d) | 2027-02-13 → 2027-02-20 (+7d) |  | 105.44d → 100.32d |
| TAEXTSCU210007 | Inspection Test | 2027-03-01 → 2027-03-07 (+6d) | 2027-03-07 → 2027-03-13 (+6d) |  | 124.44d → 119.32d |
| 4 | **Sewerage Networks** |  | 2026-12-16 → 2026-12-21 (+5d) |  |  |
| TAEXSWCU210001 | Excavation works for Trench |  | 2026-11-04 → 2026-11-10 (+6d) |  | 131.03d → 131.47d |
| TAEXSWCU210002 | Bedding Works |  | 2026-11-05 → 2026-11-11 (+6d) | 52% → 60% | 198.54d → 194.73d |
| TAEXSWCU210003 | Install GRP Pipes & Fittings |  | 2026-11-12 → 2026-11-17 (+5d) | 50% → 55% | 198.54d → 194.73d |
| TAEXSWCU210005 | Manhole Installation with backfilling |  | 2026-12-12 → 2026-12-16 (+4d) |  | 198.54d → 194.73d |
| TAEXSWCU210004 | Backfilling Works for Trench | 2026-11-11 → 2026-11-16 (+5d) | 2026-11-30 → 2026-12-05 (+5d) |  | 198.54d → 194.73d |
| TAEXSWCU210006 | Leakage Test | 2026-12-12 → 2026-12-16 (+4d) | 2026-12-16 → 2026-12-21 (+5d) |  | 198.54d → 194.73d |
| 5 | **Storm Networks** |  | 2027-02-14 → 2027-02-03 (-11d) |  |  |
| TAEXSTCU210007 | Leakage Test |  | 2027-02-14 → 2027-02-03 (-11d) |  | 136.51d → 145.66d |
| TAEXSTCU2100051 | Manhole Installation with backfilling Part 01 |  | 2026-12-01 → 2026-12-08 (+7d) |  | 25.85d → 27.45d |
| TAEXSTCU2100031 | Install GRP Pipes & Fittings Part 01 |  | 2026-10-07 → 2026-10-14 (+7d) |  | 47.39d → 48.99d |
| TAEXSTCU2100041 | Backfilling Works for Trench Part 01 |  | 2026-10-25 → 2026-11-01 (+7d) |  | 47.39d → 48.99d |
| TAEXSTCU2100021 | Bedding Works Part 01 | 2026-10-05 → 2026-10-12 (+7d) | 2026-10-05 → 2026-10-12 (+7d) |  | 47.39d → 48.99d |
| TAEXSTCU210006 | Install Catch Basin with UPVC Pipes & Fittings | 2026-12-28 → 2027-01-04 (+7d) | 2027-01-13 → 2027-01-20 (+7d) |  | 2.35d → 3.95d |
| 6 | **Upgrade local 26** |  | 2027-10-02 → 2027-09-29 (-3d) |  |  |
| 14 | **Electrical Works** |  | 2027-10-02 → 2027-09-29 (-3d) |  |  |
| TAEXELCU260001 | Trench Cut off |  | 2026-12-22 → 2026-12-28 (+6d) |  | -24.67d → -24.71d |
| TAEXELCU260005 | Cables Pulling |  | 2027-04-15 → 2027-04-20 (+5d) |  | 117.86d → 113.55d |
| TAEXELCU260004 | Trench Backfilling |  | 2027-04-12 → 2027-04-18 (+6d) | 25% → 38% | 117.86d → 113.55d |
| TAEXELCU260006 | Poles RC Foundation | 2027-03-31 → 2027-04-07 (+7d) | 2027-04-07 → 2027-04-14 (+7d) |  | 97.05d → 91.05d |
| TAEXELCU260008 | Lighting Pole Installation with Luminares | 2027-04-07 → 2027-04-14 (+7d) | 2027-04-17 → 2027-04-24 (+7d) |  | 97.05d → 91.05d |
| TAEXELCU260007 | Earthing cables | 2027-09-27 → 2027-09-25 (-2d) | 2027-10-02 → 2027-09-29 (-3d) |  | -24.62d → -22.22d |
| 10 | **CCTV Works** | 2026-11-07 → 2026-11-14 (+7d) | 2027-05-23 → 2027-05-30 (+7d) |  |  |
| TAEXCCCU260001 | Pipe Installation with manhole | 2026-11-07 → 2026-11-14 (+7d) | 2026-11-18 → 2026-11-25 (+7d) |  | -3.55d → -9.55d |
| TAEXCCCU260002 | CCTV Swiches Lighting panels Installation | 2027-04-18 → 2027-04-25 (+7d) | 2027-05-02 → 2027-05-09 (+7d) |  | -3.55d → -9.55d |
| TAEXCCCU260003 | Cable laying and connected with Panels | 2027-05-02 → 2027-05-09 (+7d) | 2027-05-11 → 2027-05-18 (+7d) |  | 69.45d → 63.45d |
| TAEXCCCU260004 | Pole Installation with IP Outdoor CCTV POE Camera | 2027-05-11 → 2027-05-18 (+7d) | 2027-05-23 → 2027-05-30 (+7d) |  | 69.45d → 63.45d |
| 3 | **Local Road 10** |  | 2027-06-09 → 2027-06-16 (+7d) |  |  |
| 12 | **Road Works** |  | 2027-05-20 → 2027-05-19 (-1d) |  |  |
| TAEXRDCL100003 | Subgrade Works | 2026-11-30 → 2026-12-07 (+7d) | 2026-12-05 → 2026-12-12 (+7d) |  | 45.55d → 47.15d |
| TAEXRDCL100004 | ABC aggregate Base Course Works | 2027-01-24 → 2027-01-31 (+7d) | 2027-01-28 → 2027-02-04 (+7d) |  | 2.35d → 3.95d |
| TAEXRDCL100005 | MBC1 layer | 2027-01-28 → 2027-02-04 (+7d) | 2027-01-30 → 2027-02-06 (+7d) |  | 2.35d → 3.95d |
| TAEXRDCL100006 | BBC Base Course | 2027-01-30 → 2027-02-06 (+7d) | 2027-02-01 → 2027-02-08 (+7d) |  | 2.35d → 3.95d |
| TAEXRDCL100008 | Precast Concret Kerps | 2027-02-01 → 2027-02-08 (+7d) | 2027-02-17 → 2027-02-24 (+7d) |  | 2.35d → 3.95d |
| TAEXRDCL100007 | BWC Asphalt Wearing Course with RC | 2027-04-29 → 2027-04-28 (-1d) | 2027-05-01 → 2027-04-29 (-2d) |  | 52.35d → 53.95d |
| TAEXRDCL100009 | Precast Interlock Works | 2027-05-01 → 2027-04-29 (-2d) | 2027-05-16 → 2027-05-15 (-1d) |  | 52.35d → 53.95d |
| TAEXRDCL100010 | Stone Paving works | 2027-05-16 → 2027-05-15 (-1d) | 2027-05-18 → 2027-05-17 (-1d) |  | 52.35d → 53.95d |
| TAEXRDCL100011 | Road Marking | 2027-05-18 → 2027-05-17 (-1d) | 2027-05-19 → 2027-05-18 (-1d) |  | 52.35d → 53.95d |
| TAEXRDCL100012 | Traffic Sinage | 2027-05-19 → 2027-05-18 (-1d) | 2027-05-20 → 2027-05-19 (-1d) |  | 52.35d → 53.95d |
| 25 | **Electrical Works** |  | 2027-06-09 → 2027-06-16 (+7d) |  |  |
| TAEXELCL100001 | Trench Cut off | 2026-12-22 → 2026-12-28 (+6d) | 2027-01-05 → 2027-01-11 (+6d) |  | -24.67d → -24.71d |
| TAEXELCL100002 | Drawpit and PVC Pipes Installation | 2027-03-31 → 2027-04-07 (+7d) | 2027-04-12 → 2027-04-19 (+7d) |  | 54.05d → 48.05d |
| TAEXELCL100003 | Road Crossing Ducts | 2027-04-12 → 2027-04-19 (+7d) | 2027-04-14 → 2027-04-21 (+7d) |  | 54.05d → 48.05d |
| TAEXELCL100006 | Poles RC Foundation | 2027-04-12 → 2027-04-19 (+7d) | 2027-04-15 → 2027-04-22 (+7d) |  | 65.05d → 59.05d |
| TAEXELCL100004 | Trench Backfilling | 2027-04-14 → 2027-04-21 (+7d) | 2027-04-26 → 2027-05-03 (+7d) |  | 54.05d → 48.05d |

| ID | Task | Start | Finish | Complete | Total float |
| --- | --- | --- | --- | --- | --- |
| TAEXELCL100008 | Lighting Pole Installation with Luminares | 2027-04-15 → 2027-04-22 (+7d) | 2027-04-20 → 2027-04-27 (+7d) |  | 94.05d → 88.05d |
| TAEXELCL100005 | Cables Pulling | 2027-04-26 → 2027-05-03 (+7d) | 2027-04-28 → 2027-05-05 (+7d) |  | 54.05d → 48.05d |
| TAEXELCL100007 | Earthing cables | 2027-06-07 → 2027-06-14 (+7d) | 2027-06-09 → 2027-06-16 (+7d) |  | 20.05d → 14.05d |
| 14 | **Telecommunication Works** | 2027-01-20 → 2027-01-27 (+7d) | 2027-05-16 → 2027-05-23 (+7d) |  |  |
| TAEXTCCL100001 | Trench Cut off | 2027-01-20 → 2027-01-27 (+7d) | 2027-01-26 → 2027-02-02 (+7d) |  | -5.61d → -11.61d |
| TAEXTCCL100002 | Drawpit and PVC Pipes Installation | 2027-04-27 → 2027-05-04 (+7d) | 2027-05-02 → 2027-05-09 (+7d) |  | -8.27d → -14.27d |
| TAEXTCCL100003 | Road Crossing Ducts | 2027-05-02 → 2027-05-09 (+7d) | 2027-05-04 → 2027-05-11 (+7d) |  | 72.05d → 66.05d |
| TAEXTCCL100004 | Trench Backfilling | 2027-05-04 → 2027-05-11 (+7d) | 2027-05-16 → 2027-05-23 (+7d) |  | 72.05d → 66.05d |
| 10 | **CCTV Works** | 2026-11-18 → 2026-11-25 (+7d) | 2027-05-31 → 2027-06-07 (+7d) |  |  |
| TAEXCCCL100001 | Pipe Installation with manhole | 2026-11-18 → 2026-11-25 (+7d) | 2026-11-28 → 2026-12-05 (+7d) |  | -3.55d → -9.55d |
| TAEXCCCL100002 | CCTV Swiches Lighting panels Installation | 2027-05-02 → 2027-05-09 (+7d) | 2027-05-13 → 2027-05-20 (+7d) |  | -3.55d → -9.55d |
| TAEXCCCL100003 | Cable laying and connected with Panels | 2027-05-13 → 2027-05-20 (+7d) | 2027-05-20 → 2027-05-27 (+7d) |  | 62.45d → 56.45d |
| TAEXCCCL100004 | Pole Installation with IP Outdoor CCTV POE Camera | 2027-05-20 → 2027-05-27 (+7d) | 2027-05-31 → 2027-06-07 (+7d) |  | 62.45d → 56.45d |
| 1 | **Potable Networks** |  | 2027-03-03 → 2027-03-07 (+4d) |  |  |
| TAEXPTCL100007 | Valve Chamber works |  | 2027-02-27 → 2027-03-02 (+3d) |  | 111.53d → 110.01d |
| TAEXPTCL100005 | Install Valves with fittings |  | 2027-02-11 → 2027-02-16 (+5d) |  | 122.9d → 120.13d |
| TAEXPTCL100006 | Install fire hydrent |  | 2027-02-18 → 2027-02-23 (+5d) |  | 111.53d → 110.01d |
| TAEXPTCL100004 | Backfilling Works for Trench | 2026-10-25 → 2026-10-10 A (-15d) | 2026-11-08 → 2026-11-10 (+2d) | 0% → 25% | 204.93d → 203.36d |
| TAEXPTCL100008 | Inspection Test | 2027-02-27 → 2027-03-02 (+3d) | 2027-03-03 → 2027-03-07 (+4d) |  | 128.78d → 125.46d |
| 2 | **TSE Networks** |  | 2027-03-08 → 2027-03-11 (+3d) |  |  |
| TAEXTSCL100007 | Inspection Test | 2027-03-03 → 2027-03-07 (+4d) | 2027-03-08 → 2027-03-11 (+3d) |  | 128.78d → 125.46d |
| 4 | **Storm Networks** |  | 2027-01-24 → 2027-01-31 (+7d) |  |  |
| TAEXSTCL100006 | Install Catch Basin with UPVC Pipes & Fittings | 2027-01-13 → 2027-01-20 (+7d) | 2027-01-24 → 2027-01-31 (+7d) |  | 2.35d → 3.95d |
| NEWPROJ-16-1-9-4 | **AMANAH ROAD** |  | 2027-08-16 → 2027-08-19 (+3d) |  |  |
| TAEXRDCA050007 | Backfilling Works for Road | 2027-07-18 → 2027-07-21 (+3d) | 2027-08-16 → 2027-08-19 (+3d) |  | 16.08d → 13.32d |
| 10 | **ZONE 2** |  | 2027-08-16 → 2027-08-23 (+7d) |  |  |
| 1 | **Collector Road 01** |  | 2027-07-05 → 2027-07-12 (+7d) |  |  |
| 13 | **Road Works** |  | 2027-04-17 → 2027-04-24 (+7d) |  |  |
| TAEXRDCC0100011 | Road Excavation and Disposal Part 01 | 2026-12-22 → 2026-12-29 (+7d) | 2026-12-26 → 2027-01-02 (+7d) |  | 8.56d → 10.16d |
| TAEXRDCC0100021 | Backfilling Works for Road Part 01 | 2026-12-26 → 2027-01-02 (+7d) | 2026-12-29 → 2027-01-05 (+7d) |  | 8.56d → 10.16d |
| TAEXRDCC0100031 | Subgrade Works Part 01 | 2026-12-29 → 2027-01-05 (+7d) | 2027-01-13 → 2027-01-20 (+7d) |  | 8.56d → 10.16d |
| TAEXRDCC010004 | ABC aggregate Base Course Works | 2027-01-13 → 2027-01-20 (+7d) | 2027-02-03 → 2027-02-10 (+7d) |  | 8.56d → 10.16d |
| TAEXRDCC010005 | MBC1 layer | 2027-02-03 → 2027-02-10 (+7d) | 2027-02-06 → 2027-02-13 (+7d) |  | 8.56d → 10.16d |
| TAEXRDCC010006 | BBC Base Course | 2027-02-06 → 2027-02-13 (+7d) | 2027-02-10 → 2027-02-17 (+7d) |  | 8.56d → 10.16d |
| TAEXRDCC010008 | Precast Concret Kerps | 2027-02-17 → 2027-02-24 (+7d) | 2027-03-10 → 2027-03-17 (+7d) |  | 2.35d → 3.95d |
| TAEXRDCC010007 | BWC Asphalt Wearing Course with RC | 2027-03-10 → 2027-03-17 (+7d) | 2027-03-13 → 2027-03-20 (+7d) |  | 85.46d → 79.46d |
| TAEXRDCC010009 | Precast Interlock Works | 2027-03-13 → 2027-03-20 (+7d) | 2027-03-31 → 2027-04-07 (+7d) |  | 85.46d → 79.46d |
| TAEXRDCC010010 | Stone Paving works | 2027-03-31 → 2027-04-07 (+7d) | 2027-04-11 → 2027-04-18 (+7d) |  | 85.46d → 79.46d |
| TAEXRDCC010011 | Road Marking | 2027-04-11 → 2027-04-18 (+7d) | 2027-04-13 → 2027-04-20 (+7d) |  | 85.46d → 79.46d |
| TAEXRDCC010012 | Traffic Sinage | 2027-04-13 → 2027-04-20 (+7d) | 2027-04-17 → 2027-04-24 (+7d) |  | 85.46d → 79.46d |
| 11 | **Electrical Works** |  | 2027-06-12 → 2027-06-19 (+7d) |  |  |
| TAEXELCC010003 | Road Crossing Ducts |  | 2027-04-14 → 2027-04-21 (+7d) |  | 57.31d → 51.31d |
| TAEXELCC010001 | Trench Cut off | 2027-01-05 → 2027-01-11 (+6d) | 2027-01-20 → 2027-01-26 (+6d) |  | -24.67d → -24.71d |
| TAEXELCC010002 | Drawpit and PVC Pipes Installation | 2027-03-31 → 2027-04-07 (+7d) | 2027-04-12 → 2027-04-19 (+7d) |  | 57.31d → 51.31d |
| TAEXELCC010006 | Poles RC Foundation | 2027-04-12 → 2027-04-19 (+7d) | 2027-04-15 → 2027-04-22 (+7d) |  | 67.05d → 61.05d |
| TAEXELCC010004 | Trench Backfilling | 2027-04-14 → 2027-04-21 (+7d) | 2027-05-02 → 2027-05-09 (+7d) |  | 57.31d → 51.31d |
| TAEXELCC010005 | Cables Pulling | 2027-05-02 → 2027-05-09 (+7d) | 2027-05-06 → 2027-05-13 (+7d) |  | 57.31d → 51.31d |
| TAEXELCC010008 | Lighting Pole Installation with Luminares | 2027-05-06 → 2027-05-13 (+7d) | 2027-05-18 → 2027-05-25 (+7d) |  | 57.31d → 51.31d |
| TAEXELCC010007 | Earthing cables | 2027-06-09 → 2027-06-16 (+7d) | 2027-06-12 → 2027-06-19 (+7d) |  | 20.05d → 14.05d |
| 1 | **Telecommunication Works** |  | 2027-06-02 → 2027-06-09 (+7d) |  |  |
| TAEXTCCC010003 | Road Crossing Ducts |  | 2027-05-16 → 2027-05-23 (+7d) |  | 43.45d → 37.45d |
| TAEXTCCC010001 | Trench Cut off | 2027-01-26 → 2027-02-02 (+7d) | 2027-02-22 → 2027-03-01 (+7d) |  | -5.61d → -11.61d |
| TAEXTCCC010002 | Drawpit and HDPE Pipes Installation | 2027-05-02 → 2027-05-09 (+7d) | 2027-05-13 → 2027-05-20 (+7d) |  | -8.27d → -14.27d |
| TAEXTCCC010004 | Trench Backfilling | 2027-05-16 → 2027-05-23 (+7d) | 2027-06-02 → 2027-06-09 (+7d) |  | 43.45d → 37.45d |
| 2 | **CCTV Works** | 2026-11-28 → 2026-12-05 (+7d) | 2027-07-05 → 2027-07-12 (+7d) |  |  |
| TAEXCCCC010001 | Pipe Installation with manhole | 2026-11-28 → 2026-12-05 (+7d) | 2026-12-12 → 2026-12-19 (+7d) |  | -3.55d → -9.55d |
| TAEXCCCC010002 | CCTV Swiches Lighting panels Installation | 2027-05-13 → 2027-05-20 (+7d) | 2027-06-01 → 2027-06-08 (+7d) |  | -3.55d → -9.55d |
| TAEXCCCC010003 | Cable laying and connected with Panels | 2027-06-01 → 2027-06-08 (+7d) | 2027-06-15 → 2027-06-22 (+7d) |  | 32.45d → 26.45d |
| TAEXCCCC010004 | Pole Installation with IP Outdoor CCTV POE Camera | 2027-06-15 → 2027-06-22 (+7d) | 2027-07-05 → 2027-07-12 (+7d) |  | 32.45d → 26.45d |
| 3 | **Potable Networks** |  | 2027-03-16 → 2027-03-20 (+4d) |  |  |
| TAEXPTCC010002 | Bedding Works |  | 2026-10-24 → 2026-10-31 (+7d) |  | 8.56d → 10.16d |
| TAEXPTCC010003 | Install Pipes & Fittings |  | 2026-11-04 → 2026-11-11 (+7d) |  | 8.56d → 10.16d |
| TAEXPTCC010004 | Backfilling Works for Trench |  | 2026-11-17 → 2026-11-24 (+7d) |  | 10.88d → 12.48d |
| TAEXPTCC010007 | Valve Chamber works |  | 2027-03-11 → 2027-03-15 (+4d) |  | 117.13d → 114.36d |
| TAEXPTCC010005 | Install Valves with fittings |  | 2027-02-01 → 2027-02-04 (+3d) |  | 122.9d → 120.13d |
| TAEXPTCC0100011 | Excavation works for Trench Part 01 | 2026-10-10 → 2026-10-17 (+7d) | 2026-10-21 → 2026-10-28 (+7d) |  | 8.56d → 10.16d |
| TAEXPTCC010006 | Install fire hydrent | 2027-01-25 → 2027-01-30 (+5d) | 2027-02-02 → 2027-02-07 (+5d) |  | 89.58d → 89.26d |
| TAEXPTCC010008 | Inspection Test | 2027-03-11 → 2027-03-15 (+4d) | 2027-03-16 → 2027-03-20 (+4d) |  | 117.13d → 114.36d |
| 4 | **TSE Networks** |  | 2027-03-21 → 2027-03-24 (+3d) |  |  |
| TAEXTSCC010001 | Excavation works for Trench |  | 2026-10-31 → 2026-11-07 (+7d) |  | 10.44d → 12.04d |

| ID | Task | Start | Finish | Complete | Total float |
| --- | --- | --- | --- | --- | --- |
| TAEXTSCC010005 | Install Valves with fittings |  | 2026-12-09 → 2026-12-16 (+7d) |  | 8.56d → 10.16d |
| TAEXTSCC010006 | Valve Chamber works |  | 2026-12-22 → 2026-12-29 (+7d) |  | 8.56d → 10.16d |
| TAEXTSCC010002 | Bedding Works | 2026-10-31 → 2026-11-07 (+7d) | 2026-11-02 → 2026-11-09 (+7d) |  | 10.44d → 12.04d |
| TAEXTSCC010003 | Install Pipes & Fittings | 2026-11-04 → 2026-11-11 (+7d) | 2026-11-21 → 2026-11-28 (+7d) |  | 8.56d → 10.16d |
| TAEXTSCC010004 | Backfilling Works for Trench | 2026-11-21 → 2026-11-28 (+7d) | 2026-12-09 → 2026-12-16 (+7d) |  | 8.56d → 10.16d |
| TAEXTSCC010007 | Inspection Test | 2027-03-16 → 2027-03-20 (+4d) | 2027-03-21 → 2027-03-24 (+3d) |  | 117.13d → 114.36d |
| 5 | **Sewerage Networks** |  | 2026-12-06 → 2026-12-10 (+4d) |  |  |
| TAEXSWCC0100011 | Excavation works for Trench Part 01 |  | 2026-10-13 → 2026-10-20 (+7d) |  | 131.03d → 131.47d |
| TAEXSWCC010005 | Manhole Installation with backfilling |  | 2026-12-01 → 2026-12-06 (+5d) | 45% → 60% | 196.4d → 192.5d |
| TAEXSWCC0100021 | Bedding Works Part 01 |  | 2026-10-14 → 2026-10-21 (+7d) |  | 203.15d → 197.65d |
| TAEXSWCC0100031 | Install GRP Pipes & Fittings Part 01 |  | 2026-10-15 → 2026-10-22 (+7d) | 70% → 80% | 203.15d → 197.65d |
| TAEXSWCC010006 | Leakage Test |  | 2026-12-06 → 2026-12-10 (+4d) |  | 196.4d → 192.5d |
| TAEXSWCC0100041 | Backfilling Works for Trench Part 01 | 2026-11-02 → 2026-11-09 (+7d) | 2026-11-11 → 2026-11-18 (+7d) |  | 203.15d → 197.65d |
| 6 | **Storm Networks** |  | 2027-01-02 → 2026-12-31 (-2d) |  |  |
| TAEXSTCC0100051 | Manhole Installation with backfilling Part 01 |  | 2026-12-03 → 2026-12-10 (+7d) |  | 21.35d → 30.45d |
| TAEXSTCC0100091 | Install Box Culvert Part 2 Part 01 | 2026-12-03 → 2026-10-10 A (-54d) | 2026-12-15 → 2026-12-14 (-1d) | 0% → 75% | 21.35d → 30.45d |
| TAEXSTCC0100041 | Backfilling Works for Trench & Box Culvert Part 01 | 2026-10-05 → 2026-10-12 (+7d) | 2026-10-13 → 2026-10-20 (+7d) |  | 64.89d → 73.99d |
| TAEXSTCC010006 | Install Catch Basin with UPVC Pipes & Fittings | 2026-12-15 → 2026-12-14 (-1d) | 2026-12-29 → 2026-12-28 (-1d) |  | 21.35d → 30.45d |
| TAEXSTCC010007 | Leakage Test | 2026-12-29 → 2026-12-28 (-1d) | 2027-01-02 → 2026-12-31 (-2d) |  | 184.46d → 185.96d |
| 11 | **Upgrade Local 28** |  | 2027-07-13 → 2027-07-20 (+7d) |  |  |
| 24 | **Road Works** | 2027-03-10 → 2027-03-17 (+7d) | 2027-05-09 → 2027-05-16 (+7d) |  |  |
| TAEXRDCU280002 | Precast Concret Kerps | 2027-03-10 → 2027-03-17 (+7d) | 2027-03-28 → 2027-04-04 (+7d) |  | 2.35d → 3.95d |
| TAEXRDCU280001 | BWC Asphalt Wearing Course with RC | 2027-04-14 → 2027-04-21 (+7d) | 2027-04-15 → 2027-04-22 (+7d) |  | 66.46d → 60.46d |
| TAEXRDCU280003 | Precast Interlock Works | 2027-04-15 → 2027-04-22 (+7d) | 2027-05-01 → 2027-05-08 (+7d) |  | 66.46d → 60.46d |
| TAEXRDCU280004 | Stone Paving works | 2027-05-01 → 2027-05-08 (+7d) | 2027-05-05 → 2027-05-12 (+7d) |  | 66.46d → 60.46d |
| TAEXRDCU280005 | Road Marking | 2027-05-05 → 2027-05-12 (+7d) | 2027-05-06 → 2027-05-13 (+7d) |  | 66.46d → 60.46d |
| TAEXRDCU280006 | Traffic Sinage | 2027-05-06 → 2027-05-13 (+7d) | 2027-05-09 → 2027-05-16 (+7d) |  | 66.46d → 60.46d |
| 15 | **Electrical Works** | 2027-01-20 → 2027-01-26 (+6d) | 2027-06-16 → 2027-06-23 (+7d) |  |  |
| TAEXELCU280001 | Trench Cut off | 2027-01-20 → 2027-01-26 (+6d) | 2027-02-01 → 2027-02-07 (+6d) |  | -24.67d → -24.71d |
| TAEXELCU280002 | Drawpit and PVC Pipes Installation | 2027-03-31 → 2027-04-07 (+7d) | 2027-04-13 → 2027-04-20 (+7d) |  | 43.05d → 37.05d |
| TAEXELCU280003 | Road Crossing Ducts | 2027-04-13 → 2027-04-20 (+7d) | 2027-04-18 → 2027-04-25 (+7d) |  | 46.05d → 40.05d |
| TAEXELCU280004 | Trench Backfilling | 2027-04-18 → 2027-04-25 (+7d) | 2027-05-08 → 2027-05-15 (+7d) |  | 46.05d → 40.05d |
| TAEXELCU280005 | Cables Pulling | 2027-05-08 → 2027-05-15 (+7d) | 2027-05-12 → 2027-05-19 (+7d) |  | 46.05d → 40.05d |
| TAEXELCU280006 | Poles RC Foundation | 2027-05-09 → 2027-05-16 (+7d) | 2027-05-16 → 2027-05-23 (+7d) |  | 43.05d → 37.05d |
| TAEXELCU280008 | Lighting Pole Installation with Luminares | 2027-05-16 → 2027-05-23 (+7d) | 2027-05-25 → 2027-06-01 (+7d) |  | 51.05d → 45.05d |
| TAEXELCU280007 | Earthing cables | 2027-06-12 → 2027-06-19 (+7d) | 2027-06-16 → 2027-06-23 (+7d) |  | 20.05d → 14.05d |
| 1 | **Telecommunication Works** | 2027-02-22 → 2027-03-01 (+7d) | 2027-06-12 → 2027-06-19 (+7d) |  |  |
| TAEXTCCU280001 | Trench Cut off | 2027-02-22 → 2027-03-01 (+7d) | 2027-03-06 → 2027-03-13 (+7d) |  | -5.61d → -11.61d |
| TAEXTCCU280002 | Drawpit and PVC Pipes Installation | 2027-05-13 → 2027-05-20 (+7d) | 2027-05-23 → 2027-05-30 (+7d) |  | -8.27d → -14.27d |
| TAEXTCCU280003 | Road Crossing Ducts | 2027-05-23 → 2027-05-30 (+7d) | 2027-05-27 → 2027-06-03 (+7d) |  | 35.05d → 29.05d |
| TAEXTCCU280004 | Trench Backfilling | 2027-05-27 → 2027-06-03 (+7d) | 2027-06-12 → 2027-06-19 (+7d) |  | 35.05d → 29.05d |
| 2 | **CCTV Works** | 2026-12-12 → 2026-12-19 (+7d) | 2027-07-13 → 2027-07-20 (+7d) |  |  |
| TAEXCCCU280001 | Pipe Installation with manhole | 2026-12-12 → 2026-12-19 (+7d) | 2026-12-26 → 2027-01-02 (+7d) |  | -3.55d → -9.55d |
| TAEXCCCU280002 | CCTV Swiches Lighting panels Installation | 2027-06-01 → 2027-06-08 (+7d) | 2027-06-17 → 2027-06-24 (+7d) |  | -3.55d → -9.55d |
| TAEXCCCU280003 | Cable laying and connected with Panels | 2027-06-17 → 2027-06-24 (+7d) | 2027-06-29 → 2027-07-06 (+7d) |  | 25.45d → 19.45d |
| TAEXCCCU280004 | Pole Installation with IP Outdoor CCTV POE Camera | 2027-06-29 → 2027-07-06 (+7d) | 2027-07-13 → 2027-07-20 (+7d) |  | 25.45d → 19.45d |
| 3 | **Potable Networks** |  | 2027-03-21 → 2027-03-24 (+3d) |  |  |
| TAEXPTCU280001 | Excavation works for Trench |  | 2026-10-27 → 2026-11-02 (+6d) |  | 68.36d → 68.04d |
| TAEXPTCU280002 | Bedding Works |  | 2026-10-27 → 2026-11-02 (+6d) |  | 195.81d → 192.49d |
| TAEXPTCU280003 | Install Pipes & Fittings |  | 2026-10-27 → 2026-11-03 (+7d) |  | 195.81d → 192.49d |
| TAEXPTCU280004 | Backfilling Works for Trench | 2026-10-27 → 2026-11-03 (+7d) | 2026-11-12 → 2026-11-19 (+7d) |  | 195.81d → 192.49d |
| TAEXPTCU280005 | Install Valves with fittings | 2026-11-08 → 2026-11-15 (+7d) | 2026-11-12 → 2026-11-19 (+7d) |  | 195.81d → 192.49d |
| TAEXPTCU280006 | Install fire hydrent | 2026-11-12 → 2026-11-19 (+7d) | 2026-11-19 → 2026-11-26 (+7d) |  | 195.81d → 192.49d |
| TAEXPTCU280007 | Valve Chamber works | 2027-02-27 → 2027-03-02 (+3d) | 2027-03-16 → 2027-03-20 (+4d) |  | 111.53d → 110.01d |
| TAEXPTCU280008 | Inspection Test | 2027-03-16 → 2027-03-20 (+4d) | 2027-03-21 → 2027-03-24 (+3d) |  | 111.53d → 110.01d |
| 4 | **TSE Networks** | 2026-11-07 → 2026-10-10 (-28d) | 2027-03-25 → 2027-03-29 (+4d) |  |  |
| TAEXTSCU280005 | Install Valves with fittings | 2026-12-26 → 2026-10-10 A (-77d) | 2026-12-30 → 2027-01-06 (+7d) | 0% → 15% | 164.79d → 163.72d |
| TAEXTSCU280006 | Valve Chamber works | 2026-12-30 → 2026-10-10 A (-81d) | 2027-01-17 → 2027-01-20 (+3d) | 0% → 15% | 164.79d → 163.72d |
| TAEXTSCU280001 | Excavation works for Trench | 2026-11-07 → 2026-11-14 (+7d) | 2026-12-02 → 2026-12-09 (+7d) |  | 62.54d → 57.42d |
| TAEXTSCU280002 | Bedding Works | 2026-12-02 → 2026-12-09 (+7d) | 2026-12-05 → 2026-12-12 (+7d) |  | 164.79d → 163.72d |
| TAEXTSCU280003 | Install Pipes & Fittings | 2026-12-05 → 2026-12-12 (+7d) | 2026-12-14 → 2026-12-21 (+7d) |  | 164.79d → 163.72d |
| TAEXTSCU280004 | Backfilling Works for Trench | 2026-12-14 → 2026-12-21 (+7d) | 2026-12-30 → 2027-01-06 (+7d) |  | 164.79d → 163.72d |
| TAEXTSCU280007 | Inspection Test | 2027-03-21 → 2027-03-24 (+3d) | 2027-03-25 → 2027-03-29 (+4d) |  | 111.53d → 110.01d |
| 19 | **Storm Networks** |  | 2027-03-28 → 2027-03-29 (+1d) |  |  |
| TAEXSTCU280007 | Leakage Test |  | 2027-03-28 → 2027-03-29 (+1d) | 25% → 85% | 111.53d → 110.01d |
| TAEXSTCU21000911 | Backfilling Works for Trench Part 01 | 2026-10-05 → 2026-10-08 A (+3d) | 2026-10-12 → 2026-10-10 A (-2d) | 0% → 100% | 31.89d → none |
| TAEXSTCU21001011 | Manhole Installation with backfilling Part 01 | 2026-11-28 → 2026-12-05 (+7d) | 2026-12-03 → 2026-12-10 (+7d) |  | 2.35d → 3.95d |
| TAEXSTCU280006 | Install Catch Basin with UPVC Pipes & Fittings | 2026-12-03 → 2026-12-10 (+7d) | 2026-12-17 → 2026-12-24 (+7d) |  | 2.35d → 3.95d |
| 5 | **Local Road 02** |  | 2027-08-01 → 2027-08-08 (+7d) |  |  |
| 2 | **Road Works** |  | 2027-07-18 → 2027-07-21 (+3d) |  |  |

| ID | Task | Start | Finish | Complete | Total float |
| --- | --- | --- | --- | --- | --- |
| TAEXRDC L020008 | Precast Concret Kerps |  | 2027-04-04 → 2027-04-11 (+7d) |  | 2.35d → 3.95d |
| TAEXRDC L020007 | BWC Asphalt Wearing Course with RC | 2027-05-19 → 2027-05-25 (+6d) | 2027-05-20 → 2027-05-26 (+6d) |  | 34.1d → 29.86d |
| TAEXRDC L020009 | Precast Interlock Works | 2027-05-20 → 2027-05-26 (+6d) | 2027-05-31 → 2027-06-06 (+6d) |  | 38.1d → 33.86d |
| TAEXRDC L020010 | Stone Paving works | 2027-05-31 → 2027-06-06 (+6d) | 2027-06-05 → 2027-06-10 (+5d) |  | 38.1d → 33.86d |
| TAEXRDC L020011 | Road Marking | 2027-07-12 → 2027-07-15 (+3d) | 2027-07-15 → 2027-07-19 (+4d) |  | 6.08d → 3.32d |
| TAEXRDC L020012 | Traffic Sinage | 2027-07-15 → 2027-07-19 (+4d) | 2027-07-18 → 2027-07-21 (+3d) |  | 6.08d → 3.32d |
| 1 | **Electrical Works** |  | 2027-06-19 → 2027-06-26 (+7d) |  |  |
| TAEXELCL020001 | Trench Cut off |  | 2027-02-09 → 2027-02-13 (+4d) | 22% → 40% | -24.67d → -24.71d |
| TAEXELCL020004 | Trench Backfilling |  | 2027-04-11 → 2027-04-15 (+4d) | 5% → 22% | 75.88d → 71.41d |
| TAEXELCL020005 | Cables Pulling |  | 2027-04-13 → 2027-04-18 (+5d) |  | 75.88d → 71.41d |
| TAEXELCL020006 | Poles RC Foundation | 2027-03-31 → 2027-04-07 (+7d) | 2027-04-04 → 2027-04-11 (+7d) |  | 83.05d → 77.05d |
| TAEXELCL020008 | Lighting Pole Installation with Luminares | 2027-04-04 → 2027-04-11 (+7d) | 2027-04-08 → 2027-04-15 (+7d) |  | 91.05d → 85.05d |
| TAEXELCL020007 | Earthing cables | 2027-06-16 → 2027-06-23 (+7d) | 2027-06-19 → 2027-06-26 (+7d) |  | 20.05d → 14.05d |
| 5 | **Telecommunication Works** |  | 2027-06-02 → 2027-06-09 (+7d) |  |  |
| TAEXTCCL020001 | Trench Cut off |  | 2027-03-13 → 2027-03-20 (+7d) |  | -5.61d → -11.61d |
| TAEXTCCL020004 | Trench Backfilling | 2027-05-23 → 2027-05-30 (+7d) | 2027-06-02 → 2027-06-09 (+7d) |  | 43.05d → 37.05d |
| 3 | **CCTV Works** | 2026-12-26 → 2027-01-02 (+7d) | 2027-08-01 → 2027-08-08 (+7d) |  |  |
| TAEXCCCL020001 | Pipe Installation with manhole | 2026-12-26 → 2027-01-02 (+7d) | 2027-01-06 → 2027-01-13 (+7d) |  | -3.55d → -9.55d |
| TAEXCCCL020002 | CCTV Swiches Lighting panels Installation | 2027-06-17 → 2027-06-24 (+7d) | 2027-07-03 → 2027-07-10 (+7d) |  | -3.55d → -9.55d |
| TAEXCCCL020003 | Cable laying and connected with Panels | 2027-07-03 → 2027-07-10 (+7d) | 2027-07-14 → 2027-07-21 (+7d) |  | 9.45d → 3.45d |
| TAEXCCCL020004 | Pole Installation with IP Outdoor CCTV POE Camera | 2027-07-14 → 2027-07-21 (+7d) | 2027-08-01 → 2027-08-08 (+7d) |  | 9.45d → 3.45d |
| 20 | **Storm Networks** |  | 2027-02-14 → 2027-02-03 (-11d) |  |  |
| TAEXSTCL020007 | Leakage Test |  | 2027-02-14 → 2027-02-03 (-11d) |  | 147.36d → 156.51d |
| 7 | **Local Road 03** |  | 2027-08-15 → 2027-08-22 (+7d) |  |  |
| 2 | **Road Works** |  | 2027-05-02 → 2027-05-06 (+4d) |  |  |
| TAEXRDCL0300021 | Backfilling Works for Road Part 01 |  | 2026-11-30 → 2026-12-07 (+7d) |  | 45.55d → 47.15d |
| TAEXRDCL030008 | Precast Concret Kerps | 2027-04-04 → 2026-10-10 A (-176d) | 2027-04-14 → 2027-04-19 (+5d) | 0% → 30% | 2.35d → 3.95d |
| TAEXRDCL030007 | BWC Asphalt Wearing Course with RC | 2027-04-14 → 2027-04-19 (+5d) | 2027-04-15 → 2027-04-20 (+5d) |  | 72.25d → 68.95d |
| TAEXRDCL030009 | Precast Interlock Works | 2027-04-15 → 2027-04-20 (+5d) | 2027-04-25 → 2027-04-29 (+4d) |  | 72.25d → 68.95d |
| TAEXRDCL030010 | Stone Paving works | 2027-04-25 → 2027-04-29 (+4d) | 2027-04-28 → 2027-05-03 (+5d) |  | 72.25d → 68.95d |
| TAEXRDCL030011 | Road Marking | 2027-04-28 → 2027-05-03 (+5d) | 2027-04-29 → 2027-05-04 (+5d) |  | 72.25d → 68.95d |
| TAEXRDCL030012 | Traffic Sinage | 2027-04-29 → 2027-05-04 (+5d) | 2027-05-02 → 2027-05-06 (+4d) |  | 72.25d → 68.95d |
| 1 | **Electrical Works** |  | 2027-06-21 → 2027-06-28 (+7d) |  |  |
| TAEXELCL030002 | Drawpit and PVC Pipes Installation |  | 2027-04-03 → 2027-04-10 (+7d) |  | 73.3d → 72.4d |
| TAEXELCL030003 | Road Crossing Ducts |  | 2027-04-04 → 2027-04-11 (+7d) |  | 73.3d → 72.4d |
| TAEXELCL030001 | Trench Cut off |  | 2027-02-15 → 2027-02-20 (+5d) |  | -24.67d → -24.71d |
| TAEXELCL030005 | Cables Pulling |  | 2027-04-18 → 2027-04-19 (+1d) |  | 73.3d → 72.4d |
| TAEXELCL030004 | Trench Backfilling | 2027-04-04 → 2026-10-10 A (-176d) | 2027-04-15 → 2027-04-17 (+2d) | 0% → 51% | 73.3d → 72.4d |
| TAEXELCL030006 | Poles RC Foundation | 2027-04-03 → 2027-04-10 (+7d) | 2027-04-06 → 2027-04-13 (+7d) |  | 83.05d → 77.05d |
| TAEXELCL030008 | Lighting Pole Installation with Luminares | 2027-04-06 → 2027-04-13 (+7d) | 2027-04-12 → 2027-04-19 (+7d) |  | 88.05d → 82.05d |
| TAEXELCL030007 | Earthing cables | 2027-06-19 → 2027-06-26 (+7d) | 2027-06-21 → 2027-06-28 (+7d) |  | 20.05d → 14.05d |
| 3 | **Telecommunication Works** |  | 2027-06-06 → 2027-06-13 (+7d) |  |  |
| TAEXTCCL030002 | Drawpit and PVC Pipes Installation |  | 2027-05-25 → 2027-06-01 (+7d) |  | -8.27d → -14.27d |
| TAEXTCCL030003 | Road Crossing Ducts |  | 2027-05-25 → 2027-06-01 (+7d) |  | 40.07d → 34.07d |
| TAEXTCCL030001 | Trench Cut off | 2027-03-13 → 2027-03-20 (+7d) | 2027-03-21 → 2027-03-28 (+7d) |  | -5.61d → -11.61d |
| TAEXTCCL030004 | Trench Backfilling | 2027-05-25 → 2027-06-01 (+7d) | 2027-06-06 → 2027-06-13 (+7d) |  | 40.07d → 34.07d |
| 4 | **CCTV Works** | 2027-01-06 → 2027-01-13 (+7d) | 2027-08-15 → 2027-08-22 (+7d) |  |  |
| TAEXCCCL030001 | Pipe Installation with manhole | 2027-01-06 → 2027-01-13 (+7d) | 2027-01-19 → 2027-01-26 (+7d) |  | -3.55d → -9.55d |
| TAEXCCCL030002 | CCTV Swiches Lighting panels Installation | 2027-07-03 → 2027-07-10 (+7d) | 2027-07-18 → 2027-07-25 (+7d) |  | -3.55d → -9.55d |
| TAEXCCCL030003 | Cable laying and connected with Panels | 2027-07-18 → 2027-07-25 (+7d) | 2027-07-29 → 2027-08-05 (+7d) |  | -2.55d → -8.55d |
| TAEXCCCL030004 | Pole Installation with IP Outdoor CCTV POE Camera | 2027-07-29 → 2027-08-05 (+7d) | 2027-08-15 → 2027-08-22 (+7d) |  | -2.55d → -8.55d |
| 9 | **Local Road 04** |  | 2027-08-11 → 2027-08-18 (+7d) |  |  |
| 2 | **Road Works** |  | 2027-06-09 → 2027-06-10 (+1d) |  |  |
| TAEXRDCL040008 | Precast Concret Kerps |  | 2027-04-21 → 2027-04-22 (+1d) | 63% → 80% | 2.35d → 3.95d |
| TAEXRDCL040007 | BWC Asphalt Wearing Course with RC | 2027-04-21 → 2027-04-22 (+1d) | 2027-05-15 → 2027-05-16 (+1d) |  | 39.33d → 38.75d |
| TAEXRDCL040009 | Precast Interlock Works | 2027-05-15 → 2027-05-16 (+1d) | 2027-05-29 → 2027-05-30 (+1d) |  | 39.33d → 38.75d |
| TAEXRDCL040010 | Stone Paving works | 2027-05-29 → 2027-05-30 (+1d) | 2027-06-06 → 2027-06-07 (+1d) |  | 39.33d → 38.75d |
| TAEXRDCL040011 | Road Marking | 2027-06-06 → 2027-06-07 (+1d) | 2027-06-07 → 2027-06-08 (+1d) |  | 39.33d → 38.75d |
| TAEXRDCL040012 | Traffic Sinage | 2027-06-07 → 2027-06-08 (+1d) | 2027-06-09 → 2027-06-10 (+1d) |  | 39.33d → 38.75d |
| 1 | **Electrical Works** |  | 2027-06-23 → 2027-06-30 (+7d) |  |  |
| TAEXELCL040001 | Trench Cut off |  | 2027-03-03 → 2027-03-06 (+3d) | 3% → 10% | -24.67d → -24.71d |
| TAEXELCL040002 | Drawpit and PVC Pipes Installation |  | 2027-04-04 → 2027-04-11 (+7d) |  | 73.75d → 67.75d |
| TAEXELCL040003 | Road Crossing Ducts |  | 2027-04-05 → 2027-04-12 (+7d) |  | 73.75d → 67.75d |
| TAEXELCL040006 | Poles RC Foundation | 2027-04-04 → 2027-04-11 (+7d) | 2027-04-07 → 2027-04-14 (+7d) |  | 84.41d → 78.41d |
| TAEXELCL040004 | Trench Backfilling | 2027-04-05 → 2027-04-12 (+7d) | 2027-04-17 → 2027-04-24 (+7d) |  | 73.75d → 67.75d |
| TAEXELCL040008 | Lighting Pole Installation with Luminares | 2027-04-07 → 2027-04-14 (+7d) | 2027-04-13 → 2027-04-20 (+7d) |  | 87.41d → 81.41d |
| TAEXELCL040005 | Cables Pulling | 2027-04-17 → 2027-04-24 (+7d) | 2027-04-20 → 2027-04-27 (+7d) |  | 73.75d → 67.75d |
| TAEXELCL040009 | Install Substation & RMU | 2027-04-20 → 2027-04-27 (+7d) | 2027-05-01 → 2027-05-08 (+7d) |  | 86.75d → 80.75d |
| TAEXELCL040007 | Earthing cables | 2027-06-21 → 2027-06-28 (+7d) | 2027-06-23 → 2027-06-30 (+7d) |  | 20.05d → 14.05d |
| 3 | **Telecommunication Works** |  | 2027-06-06 → 2027-06-13 (+7d) |  |  |

| ID | Task | Start | Finish | Complete | Total float |
| --- | --- | --- | --- | --- | --- |
| TAEXTCCL040001 | Trench Cut off |  | 2027-03-28 → 2027-04-04 (+7d) |  | -5.61d → -11.61d |
| TAEXTCCL040004 | Trench Backfilling | 2027-05-25 → 2027-06-01 (+7d) | 2027-06-06 → 2027-06-13 (+7d) |  | 40.73d → 34.73d |
| 4 | **CCTV Works** | 2027-01-19 → 2027-01-26 (+7d) | 2027-08-11 → 2027-08-18 (+7d) |  |  |
| TAEXCCCL040001 | Pipe Installation with manhole | 2027-01-19 → 2027-01-26 (+7d) | 2027-01-31 → 2027-02-07 (+7d) |  | -3.55d → -9.55d |
| TAEXCCCL040002 | CCTV Swiches Lighting panels Installation | 2027-07-03 → 2027-07-10 (+7d) | 2027-07-14 → 2027-07-21 (+7d) |  | -3.55d → -9.55d |
| TAEXCCCL040003 | Cable laying and connected with Panels | 2027-07-14 → 2027-07-21 (+7d) | 2027-07-26 → 2027-08-02 (+7d) |  | 0.45d → -5.55d |
| TAEXCCCL040004 | Pole Installation with IP Outdoor CCTV POE Camera | 2027-07-26 → 2027-08-02 (+7d) | 2027-08-11 → 2027-08-18 (+7d) |  | 0.45d → -5.55d |
| 2 | **Local Road 05** |  | 2027-08-16 → 2027-08-23 (+7d) |  |  |
| 3 | **Road Works** |  | 2027-06-15 → 2027-06-21 (+6d) |  |  |
| TAEXRDCL050008 | Precast Concret Kerps |  | 2026-12-05 → 2026-12-07 (+2d) | 64% → 90% | 150.34d → 148.76d |
| TAEXRDCL050007 | BWC Asphalt Wearing Course with RC | 2027-05-20 → 2027-05-26 (+6d) | 2027-05-22 → 2027-05-27 (+5d) |  | 34.1d → 29.86d |
| TAEXRDCL050009 | Precast Interlock Works | 2027-05-22 → 2027-05-27 (+5d) | 2027-06-08 → 2027-06-14 (+6d) |  | 34.1d → 29.86d |
| TAEXRDCL050010 | Stone Paving works | 2027-06-08 → 2027-06-14 (+6d) | 2027-06-12 → 2027-06-17 (+5d) |  | 34.1d → 29.86d |
| TAEXRDCL050011 | Road Marking | 2027-06-12 → 2027-06-17 (+5d) | 2027-06-13 → 2027-06-19 (+6d) |  | 34.1d → 29.86d |
| TAEXRDCL050012 | Traffic Sinage | 2027-06-13 → 2027-06-19 (+6d) | 2027-06-15 → 2027-06-21 (+6d) |  | 34.1d → 29.86d |
| 1 | **Electrical Works** |  | 2027-06-26 → 2027-07-03 (+7d) |  |  |
| TAEXELCL050001 | Trench Cut off |  | 2027-03-16 → 2027-03-18 (+2d) | 6% → 10% | -24.67d → -24.71d |
| TAEXELCL050004 | Trench Backfilling | 2027-03-31 → 2027-04-07 (+7d) | 2027-04-12 → 2027-04-19 (+7d) |  | 79.05d → 73.05d |
| TAEXELCL050006 | Poles RC Foundation | 2027-03-31 → 2027-04-07 (+7d) | 2027-04-04 → 2027-04-11 (+7d) |  | 60.05d → 54.05d |
| TAEXELCL050008 | Lighting Pole Installation with Luminares | 2027-04-04 → 2027-04-11 (+7d) | 2027-04-10 → 2027-04-17 (+7d) |  | 60.05d → 54.05d |
| TAEXELCL050005 | Cables Pulling | 2027-04-12 → 2027-04-19 (+7d) | 2027-04-15 → 2027-04-22 (+7d) |  | 79.05d → 73.05d |
| TAEXELCL050007 | Earthing cables | 2027-06-23 → 2027-06-30 (+7d) | 2027-06-26 → 2027-07-03 (+7d) |  | 20.05d → 14.05d |
| 2 | **Telecommunication Works** |  | 2027-06-06 → 2027-06-13 (+7d) |  |  |
| TAEXTCCL050001 | Trench Cut off |  | 2027-04-05 → 2027-04-12 (+7d) |  | -5.61d → -11.61d |
| TAEXTCCL050004 | Trench Backfilling | 2027-05-25 → 2027-06-01 (+7d) | 2027-06-06 → 2027-06-13 (+7d) |  | 33.73d → 27.73d |
| 4 | **CCTV Works** | 2027-01-31 → 2027-02-07 (+7d) | 2027-08-16 → 2027-08-23 (+7d) |  |  |
| TAEXCCCL050001 | Pipe Installation with manhole | 2027-01-31 → 2027-02-07 (+7d) | 2027-02-11 → 2027-02-18 (+7d) |  | -3.55d → -9.55d |
| TAEXCCCL050002 | CCTV Swiches Lighting panels Installation | 2027-07-14 → 2027-07-21 (+7d) | 2027-07-26 → 2027-08-02 (+7d) |  | -3.55d → -9.55d |
| TAEXCCCL050003 | Cable laying and connected with Panels | 2027-07-26 → 2027-08-02 (+7d) | 2027-08-07 → 2027-08-14 (+7d) |  | -3.55d → -9.55d |
| TAEXCCCL050004 | Pole Installation with IP Outdoor CCTV POE Camera | 2027-08-07 → 2027-08-14 (+7d) | 2027-08-16 → 2027-08-23 (+7d) |  | -3.55d → -9.55d |
| 11 | **ZONE 3** |  | 2027-09-27 → 2027-09-25 (-2d) |  |  |
| 12 | **Road Works** |  | 2027-06-15 → 2027-06-14 (-1d) |  |  |
| TAEXRDCL010004 | ABC aggregate Base Course Works |  | 2027-02-07 → 2027-02-11 (+4d) |  | 58.89d → 59.39d |
| TAEXRDCL010005 | MBC1 layer |  | 2027-02-07 → 2027-02-13 (+6d) |  | 58.89d → 59.39d |
| TAEXRDCL010006 | BBC Base Course |  | 2027-02-08 → 2027-02-13 (+5d) |  | 58.89d → 59.39d |
| TAEXRDCL010008 | Precast Concret Kerps |  | 2027-04-28 → 2027-04-27 (-1d) | 15% → 50% | 2.35d → 3.95d |
| TAEXRDCL010007 | BWC Asphalt Wearing Course with RC | 2027-04-28 → 2027-04-27 (-1d) | 2027-04-29 → 2027-04-28 (-1d) |  | 41.35d → 42.95d |
| TAEXRDCL010009 | Precast Interlock Works | 2027-05-20 → 2027-05-19 (-1d) | 2027-06-07 → 2027-06-06 (-1d) |  | 41.35d → 42.95d |
| TAEXRDCL010010 | Stone Paving works | 2027-06-07 → 2027-06-06 (-1d) | 2027-06-12 → 2027-06-10 (-2d) |  | 41.35d → 42.95d |
| TAEXRDCL010011 | Road Marking | 2027-06-12 → 2027-06-10 (-2d) | 2027-06-13 → 2027-06-12 (-1d) |  | 41.35d → 42.95d |
| TAEXRDCL010012 | Traffic Sinage | 2027-06-13 → 2027-06-12 (-1d) | 2027-06-15 → 2027-06-14 (-1d) |  | 41.35d → 42.95d |
| 2 | **Telecommunication Works** | 2027-04-28 → 2027-05-05 (+7d) | 2027-06-13 → 2027-06-20 (+7d) |  |  |
| TAEXTCCL010001 | Trench Cut off | 2027-04-28 → 2027-05-05 (+7d) | 2027-05-06 → 2027-05-13 (+7d) |  | -5.61d → -11.61d |
| TAEXTCCL010002 | Drawpit and PVC Pipes Installation | 2027-05-25 → 2027-06-01 (+7d) | 2027-05-30 → 2027-06-06 (+7d) |  | -8.27d → -14.27d |
| TAEXTCCL010003 | Road Crossing Ducts | 2027-05-30 → 2027-06-06 (+7d) | 2027-06-01 → 2027-06-08 (+7d) |  | 41.73d → 35.73d |
| TAEXTCCL010004 | Trench Backfilling | 2027-06-01 → 2027-06-08 (+7d) | 2027-06-13 → 2027-06-20 (+7d) |  | 41.73d → 35.73d |
| 16 | **CCTV Works** | 2027-04-10 → 2027-04-17 (+7d) | 2027-06-07 → 2027-06-14 (+7d) |  |  |
| TAEXCCCL010001 | Pipe Installation with manhole | 2027-04-10 → 2027-04-17 (+7d) | 2027-04-24 → 2027-05-01 (+7d) |  | -2.55d → -8.55d |
| TAEXCCCL010002 | CCTV Swiches Lighting panels Installation | 2027-04-24 → 2027-05-01 (+7d) | 2027-05-09 → 2027-05-16 (+7d) |  | 56.45d → 50.45d |
| TAEXCCCL010003 | Cable laying and connected with Panels | 2027-05-09 → 2027-05-16 (+7d) | 2027-05-20 → 2027-05-27 (+7d) |  | 56.45d → 50.45d |
| TAEXCCCL010004 | Pole Installation with IP Outdoor CCTV POE Camera | 2027-05-20 → 2027-05-27 (+7d) | 2027-06-07 → 2027-06-14 (+7d) |  | 56.45d → 50.45d |
| 17 | **Potable Networks** |  | 2027-03-10 → 2027-03-14 (+4d) |  |  |
| TAEXPTCL010002 | Bedding Works |  | 2026-10-10 → 2026-10-17 (+7d) |  | 74.62d → 77.72d |
| TAEXPTCL010003 | Install Pipes & Fittings |  | 2027-01-06 → 2027-01-10 (+4d) |  | 89.58d → 89.26d |
| TAEXPTCL010004 | Backfilling Works for Trench |  | 2027-01-11 → 2027-01-14 (+3d) |  | 126.31d → 123.54d |
| TAEXPTCL0100011 | Excavation works for Trench Part 01 |  | 2026-10-05 → 2026-10-12 (+7d) |  | 8.56d → 10.16d |
| TAEXPTCL010007 | Valve Chamber works |  | 2027-03-07 → 2027-03-10 (+3d) |  | 68.36d → 68.04d |
| TAEXPTCL010005 | Install Valves with fittings |  | 2027-01-13 → 2027-01-17 (+4d) |  | 126.31d → 123.54d |
| TAEXPTCL010006 | Install fire hydrent |  | 2027-01-06 → 2027-01-11 (+5d) |  | 94.56d → 94.24d |
| TAEXPTCL010008 | Inspection Test |  | 2027-03-10 → 2027-03-14 (+4d) |  | 126.76d → 123.44d |
| 3 | **TSE Networks** |  | 2027-04-22 → 2027-04-29 (+7d) |  |  |
| TAEXTSCL010002 | Bedding Works |  | 2026-10-10 → 2026-10-17 (+7d) |  | 74.62d → 77.72d |
| TAEXTSCL010003 | Install Pipes & Fittings |  | 2027-04-14 → 2027-04-20 (+6d) |  | 66.66d → 61.54d |
| TAEXTSCL010004 | Backfilling Works for Trench |  | 2027-04-20 → 2027-04-26 (+6d) |  | 66.66d → 61.54d |
| TAEXTSCL0100011 | Excavation works for Trench Part 01 |  | 2026-10-08 → 2026-10-15 (+7d) |  | 10.44d → 12.04d |
| TAEXTSCL010006 | Valve Chamber works |  | 2027-04-21 → 2027-04-27 (+6d) |  | 99.07d → 93.95d |
| TAEXTSCL010005 | Install Valves with fittings |  | 2027-04-20 → 2027-04-26 (+6d) |  | 66.66d → 61.54d |
| TAEXTSCL010007 | Inspection Test |  | 2027-04-22 → 2027-04-29 (+7d) |  | 99.07d → 93.95d |
| 13 | **Sewerage Networks** |  | 2026-12-10 → 2026-12-15 (+5d) |  |  |
| TAEXSWCL0100011 | Excavation works for Trench Part 01 |  | 2026-10-26 → 2026-11-01 (+6d) |  | 131.03d → 131.47d |

| ID | Task | Start | Finish | Complete | Total float |
| --- | --- | --- | --- | --- | --- |
| TAEXSWCL0100021 | Bedding Works Part 01 |  | 2026-10-28 → 2026-11-03 (+6d) |  | 198d → 194.6d |
| TAEXSWCL0100031 | Install GRP Pipes & Fittings Part 01 |  | 2026-11-08 → 2026-11-14 (+6d) |  | 198d → 194.6d |
| TAEXSWCL0100051 | Manhole Installation with backfilling Part 01 |  | 2026-12-07 → 2026-12-13 (+6d) | 5% → 15% | 198d → 194.6d |
| TAEXSWCL0100041 | Backfilling Works for Trench Part 01 |  | 2026-11-25 → 2026-12-01 (+6d) |  | 198d → 194.6d |
| TAEXSWCL010006 | Leakage Test | 2026-12-08 → 2026-10-10 A (-59d) | 2026-12-10 → 2026-12-15 (+5d) | 0% → 40% | 198d → 194.6d |
| 4 | **Storm Networks** |  | 2026-12-16 → 2026-12-21 (+5d) |  |  |
| TAEXSTCL0100051 | Manhole Installation with backfilling Part 01 |  | 2026-12-01 → 2026-12-06 (+5d) | 65% → 85% | 58.89d → 59.39d |
| TAEXSTCL0100011 | Excavation works for Trench & Box Culvert Part 01 |  | 2026-10-08 → 2026-10-15 (+7d) |  | 12.98d → 15.33d |
| TAEXSTCL010006 | Install Catch Basin with UPVC Pipes & Fittings |  | 2026-12-07 → 2026-12-12 (+5d) |  | 58.89d → 59.39d |
| TAEXSTCL0100041 | Backfilling Works for Trench and Boxculvert Part 01 |  |  | 5% → 50% | 94.03d → 99.93d |
| TAEXSTCL0100021 | Bedding Works Part 01 |  | 2026-10-11 → 2026-10-18 (+7d) |  | 74.62d → 77.72d |
| TAEXSTCL0100031 | Install GRP Pipes & Fittings Part 01 |  | 2026-10-14 → 2026-10-19 (+5d) | 70% → 85% | 74.62d → 77.72d |
| TAEXSTCL010007 | Leakage Test | 2026-12-13 → 2026-12-17 (+4d) | 2026-12-16 → 2026-12-21 (+5d) |  | 58.89d → 59.39d |
| 12 | **Road Works** |  | 2027-06-24 → 2027-06-23 (-1d) |  |  |
| TAEXRDCL0600031 | Subgrade Works Part 01 | 2027-02-24 → 2027-03-03 (+7d) | 2027-03-01 → 2027-03-08 (+7d) |  | 37.21d → 31.21d |
| TAEXRDCL060004 | ABC aggregate Base Course Works | 2027-03-01 → 2027-03-08 (+7d) | 2027-03-10 → 2027-03-17 (+7d) |  | 37.21d → 31.21d |
| TAEXRDCL060005 | MBC1 layer | 2027-03-10 → 2027-03-17 (+7d) | 2027-03-11 → 2027-03-18 (+7d) |  | 37.21d → 31.21d |
| TAEXRDCL060006 | BBC Base Course | 2027-03-11 → 2027-03-18 (+7d) | 2027-03-18 → 2027-03-25 (+7d) |  | 37.21d → 31.21d |
| TAEXRDCL060008 | Precast Concret Kerps | 2027-04-28 → 2027-04-27 (-1d) | 2027-05-19 → 2027-05-18 (-1d) |  | 2.35d → 3.95d |
| TAEXRDCL060007 | BWC Asphalt Wearing Course with RC | 2027-05-19 → 2027-05-18 (-1d) | 2027-05-22 → 2027-05-20 (-2d) |  | 33.35d → 34.95d |
| TAEXRDCL060009 | Precast Interlock Works | 2027-05-22 → 2027-05-20 (-2d) | 2027-06-07 → 2027-06-06 (-1d) |  | 33.35d → 34.95d |
| TAEXRDCL060010 | Stone Paving works | 2027-06-07 → 2027-06-06 (-1d) | 2027-06-21 → 2027-06-20 (-1d) |  | 33.35d → 34.95d |
| TAEXRDCL060011 | Road Marking | 2027-06-21 → 2027-06-20 (-1d) | 2027-06-22 → 2027-06-21 (-1d) |  | 33.35d → 34.95d |
| TAEXRDCL060012 | Traffic Sinage | 2027-06-22 → 2027-06-21 (-1d) | 2027-06-24 → 2027-06-23 (-1d) |  | 33.35d → 34.95d |
| 2 | **Telecommunication Works** | 2027-05-06 → 2027-05-13 (+7d) | 2027-06-23 → 2027-06-30 (+7d) |  |  |
| TAEXTCCL060001 | Trench Cut off | 2027-05-06 → 2027-05-13 (+7d) | 2027-05-18 → 2027-05-25 (+7d) |  | -5.61d → -11.61d |
| TAEXTCCL060002 | Drawpit and PVC Pipes Installation | 2027-05-30 → 2027-06-06 (+7d) | 2027-06-05 → 2027-06-12 (+7d) |  | -8.27d → -14.27d |
| TAEXTCCL060003 | Road Crossing Ducts | 2027-06-05 → 2027-06-12 (+7d) | 2027-06-07 → 2027-06-14 (+7d) |  | 32.73d → 26.73d |
| TAEXTCCL060004 | Trench Backfilling | 2027-06-07 → 2027-06-14 (+7d) | 2027-06-23 → 2027-06-30 (+7d) |  | 32.73d → 26.73d |
| 17 | **CCTV Works** | 2027-04-24 → 2027-05-01 (+7d) | 2027-06-21 → 2027-06-28 (+7d) |  |  |
| TAEXCCCL060001 | Pipe Installation with manhole | 2027-04-24 → 2027-05-01 (+7d) | 2027-05-08 → 2027-05-15 (+7d) |  | -2.55d → -8.55d |
| TAEXCCCL060002 | CCTV Swiches Lighting panels Installation | 2027-05-08 → 2027-05-15 (+7d) | 2027-05-23 → 2027-05-30 (+7d) |  | 44.45d → 38.45d |
| TAEXCCCL060003 | Cable laying and connected with Panels | 2027-05-23 → 2027-05-30 (+7d) | 2027-06-03 → 2027-06-10 (+7d) |  | 44.45d → 38.45d |
| TAEXCCCL060004 | Pole Installation with IP Outdoor CCTV POE Camera | 2027-06-03 → 2027-06-10 (+7d) | 2027-06-21 → 2027-06-28 (+7d) |  | 44.45d → 38.45d |
| 16 | **Potable Networks** |  | 2027-03-25 → 2027-03-30 (+5d) |  |  |
| TAEXPTCL060001 | Excavation works for Trench |  | 2026-10-21 → 2026-10-28 (+7d) |  | 68.36d → 68.04d |
| TAEXPTCL060003 | Install Pipes & Fittings |  | 2027-01-07 → 2027-01-11 (+4d) |  | 89.58d → 89.26d |
| TAEXPTCL060002 | Bedding Works |  | 2026-11-03 → 2026-11-10 (+7d) |  | 91.2d → 86.2d |
| TAEXPTCL060007 | Valve Chamber works |  | 2027-03-21 → 2027-03-25 (+4d) |  | 68.36d → 68.04d |
| TAEXPTCL060004 | Backfilling Works for Trench |  | 2027-01-16 → 2027-01-20 (+4d) |  | 139.41d → 136.64d |
| TAEXPTCL060005 | Install Valves with fittings |  | 2027-02-04 → 2027-02-08 (+4d) |  | 122.9d → 120.13d |
| TAEXPTCL060006 | Install fire hydrent | 2027-02-02 → 2027-02-07 (+5d) | 2027-02-09 → 2027-02-14 (+5d) |  | 89.58d → 89.26d |
| TAEXPTCL060008 | Inspection Test | 2027-03-21 → 2027-03-25 (+4d) | 2027-03-25 → 2027-03-30 (+5d) |  | 113.16d → 109.84d |
| 3 | **TSE Networks** |  | 2027-05-12 → 2027-05-18 (+6d) |  |  |
| TAEXTSCL060001 | Excavation works for Trench |  | 2026-11-02 → 2026-11-09 (+7d) |  | 62.54d → 57.42d |
| TAEXTSCL060003 | Install Pipes & Fittings |  | 2027-04-17 → 2027-04-24 (+7d) |  | 67.78d → 62.66d |
| TAEXTSCL060002 | Bedding Works |  | 2026-11-03 → 2026-11-10 (+7d) |  | 91.2d → 86.2d |
| TAEXTSCL060004 | Backfilling Works for Trench |  | 2027-04-22 → 2027-04-28 (+6d) |  | 67.78d → 62.66d |
| TAEXTSCL060007 | Inspection Test |  | 2027-05-12 → 2027-05-18 (+6d) |  | 79.67d → 74.55d |
| TAEXTSCL060006 | Valve Chamber works |  | 2027-05-11 → 2027-05-17 (+6d) |  | 79.67d → 74.55d |
| TAEXTSCL060005 | Install Valves with fittings |  | 2027-04-24 → 2027-04-29 (+5d) |  | 66.66d → 61.54d |
| 14 | **Sewerage Networks** |  | 2027-02-28 → 2027-03-07 (+7d) |  |  |
| TAEXSWCL060006 | Leakage Test |  | 2027-02-28 → 2027-03-07 (+7d) |  | 130.96d → 124.96d |
| TAEXSWCL0600021 | Bedding Works Part 01 |  | 2026-10-17 → 2026-10-21 (+4d) |  | 225.9d → 221.55d |
| TAEXSWCL0600031 | Install GRP Pipes & Fittings Part 01 |  | 2026-10-19 → 2026-10-25 (+6d) | 45% → 50% | 225.9d → 221.55d |
| TAEXSWCL0600051 | Manhole Installation with backfilling Part 01 | 2026-11-22 → 2026-10-10 A (-43d) | 2026-12-02 → 2026-12-07 (+5d) | 0% → 20% | 203.1d → 198.9d |
| TAEXSWCL0600041 | Backfilling Works for Trench Part 01 | 2026-10-25 → 2026-10-31 (+6d) | 2026-11-05 → 2026-11-11 (+6d) |  | 225.9d → 221.55d |
| 4 | **Storm Networks** |  | 2027-02-24 → 2027-03-03 (+7d) |  |  |
| TAEXSTCL060001 | Excavation works for Trench |  | 2026-10-11 → 2026-10-18 (+7d) |  | 12.98d → 15.33d |
| TAEXSTCL060002 | Bedding Works |  | 2026-11-04 → 2026-11-11 (+7d) |  | 91.2d → 86.2d |
| TAEXSTCL060003 | Install GRP Pipes & Fittings |  | 2026-11-07 → 2026-11-12 (+5d) | 75% → 85% | 91.2d → 86.2d |
| TAEXSTCL060005 | Manhole Installation with backfilling |  | 2026-12-06 → 2026-12-12 (+6d) |  | 91.2d → 86.2d |
| TAEXSTCL060004 | Backfilling Works for Trench |  | 2026-11-24 → 2026-11-30 (+6d) | 20% → 30% | 91.2d → 86.2d |
| TAEXSTCL060006 | Install Catch Basin with UPVC Pipes & Fittings | 2027-02-07 → 2027-02-14 (+7d) | 2027-02-21 → 2027-02-28 (+7d) |  | 37.21d → 31.21d |
| TAEXSTCL060007 | Leakage Test | 2027-02-21 → 2027-02-28 (+7d) | 2027-02-24 → 2027-03-03 (+7d) |  | 37.21d → 31.21d |
| 12 | **Road Works** |  | 2027-07-29 → 2027-07-28 (-1d) |  |  |
| TAEXRDCL070004 | ABC aggregate Base Course Works | 2027-03-29 → 2027-04-05 (+7d) | 2027-04-01 → 2027-04-08 (+7d) |  | 31.19d → 26.67d |
| TAEXRDCL070005 | MBC1 layer | 2027-04-01 → 2027-04-08 (+7d) | 2027-04-03 → 2027-04-10 (+7d) |  | 31.19d → 26.67d |
| TAEXRDCL070006 | BBC Base Course | 2027-04-03 → 2027-04-10 (+7d) | 2027-04-05 → 2027-04-12 (+7d) |  | 31.19d → 26.67d |
| TAEXRDCL070008 | Precast Concret Kerps | 2027-05-19 → 2027-05-18 (-1d) | 2027-06-09 → 2027-06-08 (-1d) |  | 2.35d → 3.95d |

| ID | Task | Start | Finish | Complete | Total float |
| --- | --- | --- | --- | --- | --- |
| TAEXRDCL070007 | BWC Asphalt Wearing Course with RC | 2027-06-09 → 2027-06-08 (-1d) | 2027-06-10 → 2027-06-09 (-1d) |  | 3.35d → 4.95d |
| TAEXRDCL070009 | Precast Interlock Works | 2027-06-20 → 2027-06-19 (-1d) | 2027-07-08 → 2027-07-07 (-1d) |  | 3.35d → 4.95d |
| TAEXRDCL070010 | Stone Paving works | 2027-07-08 → 2027-07-07 (-1d) | 2027-07-26 → 2027-07-25 (-1d) |  | 3.35d → 4.95d |
| TAEXRDCL070011 | Road Marking | 2027-07-26 → 2027-07-25 (-1d) | 2027-07-27 → 2027-07-26 (-1d) |  | 3.35d → 4.95d |
| TAEXRDCL070012 | Traffic Sinage | 2027-07-27 → 2027-07-26 (-1d) | 2027-07-29 → 2027-07-28 (-1d) |  | 3.35d → 4.95d |
| 2 | **Telecommunication Works** | 2027-05-18 → 2027-05-25 (+7d) | 2027-06-23 → 2027-06-30 (+7d) |  |  |
| TAEXTCCL070001 | Trench Cut off | 2027-05-18 → 2027-05-25 (+7d) | 2027-05-25 → 2027-06-01 (+7d) |  | -5.61d → -11.61d |
| TAEXTCCL070002 | Drawpit and PVC Pipes Installation | 2027-06-05 → 2027-06-12 (+7d) | 2027-06-09 → 2027-06-16 (+7d) |  | -8.27d → -14.27d |
| TAEXTCCL070003 | Road Crossing Ducts | 2027-06-09 → 2027-06-16 (+7d) | 2027-06-12 → 2027-06-19 (+7d) |  | 32.73d → 26.73d |
| TAEXTCCL070004 | Trench Backfilling | 2027-06-12 → 2027-06-19 (+7d) | 2027-06-23 → 2027-06-30 (+7d) |  | 32.73d → 26.73d |
| 18 | **CCTV Works** | 2027-05-08 → 2027-05-15 (+7d) | 2027-06-28 → 2027-07-05 (+7d) |  |  |
| TAEXCCCL070001 | Pipe Installation with manhole | 2027-05-08 → 2027-05-15 (+7d) | 2027-05-18 → 2027-05-25 (+7d) |  | -2.55d → -8.55d |
| TAEXCCCL070002 | CCTV Swiches Lighting panels Installation | 2027-05-18 → 2027-05-25 (+7d) | 2027-06-01 → 2027-06-08 (+7d) |  | 38.45d → 32.45d |
| TAEXCCCL070003 | Cable laying and connected with Panels | 2027-06-01 → 2027-06-08 (+7d) | 2027-06-13 → 2027-06-20 (+7d) |  | 38.45d → 32.45d |
| TAEXCCCL070004 | Pole Installation with IP Outdoor CCTV POE Camera | 2027-06-13 → 2027-06-20 (+7d) | 2027-06-28 → 2027-07-05 (+7d) |  | 38.45d → 32.45d |
| 3 | **Potable Networks** |  | 2027-04-11 → 2027-04-15 (+4d) |  |  |
| TAEXPTCL070002 | Bedding Works |  | 2026-10-11 → 2026-10-18 (+7d) |  | 165.2d → 162.2d |
| TAEXPTCL070003 | Install Pipes & Fittings |  | 2027-01-12 → 2027-01-17 (+5d) |  | 89.58d → 89.26d |
| TAEXPTCL070004 | Backfilling Works for Trench |  | 2027-01-21 → 2027-01-25 (+4d) |  | 122.9d → 120.13d |
| TAEXPTCL070005 | Install Valves with fittings |  | 2027-01-21 → 2027-01-25 (+4d) |  | 122.9d → 120.13d |
| TAEXPTCL0700011 | Excavation works for Trench Part 01 | 2026-10-05 → 2026-10-12 (+7d) | 2026-10-10 → 2026-10-17 (+7d) |  | 8.56d → 10.16d |
| TAEXPTCL070006 | Install fire hydrent | 2027-01-12 → 2027-01-17 (+5d) | 2027-01-18 → 2027-01-23 (+5d) |  | 89.58d → 89.26d |
| TAEXPTCL070007 | Valve Chamber works | 2027-03-21 → 2027-03-25 (+4d) | 2027-04-06 → 2027-04-11 (+5d) |  | 68.36d → 68.04d |
| TAEXPTCL070008 | Inspection Test | 2027-04-06 → 2027-04-11 (+5d) | 2027-04-11 → 2027-04-15 (+4d) |  | 99.16d → 95.84d |
| 4 | **TSE Networks** |  | 2027-05-19 → 2027-05-25 (+6d) |  |  |
| TAEXTSCL070005 | Install Valves with fittings |  | 2027-04-29 → 2027-05-05 (+6d) |  | 66.66d → 61.54d |
| TAEXTSCL070006 | Valve Chamber works |  | 2027-05-15 → 2027-05-20 (+5d) |  | 66.66d → 61.54d |
| TAEXTSCL0700011 | Excavation works for Trench Part 01 | 2026-10-08 → 2026-10-15 (+7d) | 2026-10-13 → 2026-10-20 (+7d) |  | 10.44d → 12.04d |
| TAEXTSCL0700021 | Bedding Works Part 01 | 2026-10-15 → 2026-10-20 (+5d) | 2026-10-17 → 2026-10-21 (+4d) |  | 174.9d → 170.85d |
| TAEXTSCL0700031 | Install Pipes & Fittings Part 01 | 2026-10-17 → 2026-10-21 (+4d) | 2026-10-22 → 2026-10-27 (+5d) |  | 174.9d → 170.85d |
| TAEXTSCL0700041 | Backfilling Works for Trench Part 01 | 2026-10-22 → 2026-10-27 (+5d) | 2026-11-01 → 2026-11-05 (+4d) |  | 185.62d → 181.57d |
| TAEXTSCL070007 | Inspection Test | 2027-05-15 → 2027-05-20 (+5d) | 2027-05-19 → 2027-05-25 (+6d) |  | 66.66d → 61.54d |
| 15 | **Sewerage Networks** |  | 2026-11-29 → 2026-12-03 (+4d) |  |  |
| TAEXSWCL070001 | Excavation works for Trench |  | 2026-10-15 → 2026-10-10 A (-5d) | 95% → 100% | 131.03d → none |
| TAEXSWCL070002 | Bedding Works |  | 2026-10-15 → 2026-10-10 A (-5d) | 95% → 100% | 218.35d → none |
| TAEXSWCL070003 | Install GRP Pipes & Fittings |  | 2026-10-15 → 2026-10-21 (+6d) |  | 218.35d → 213.9d |
| TAEXSWCL070005 | Manhole Installation with backfilling |  | 2026-11-25 → 2026-11-30 (+5d) | 75% → 90% | 208.35d → 204.15d |
| TAEXSWCL070004 | Backfilling Works for Trench | 2026-10-17 → 2026-10-22 (+5d) | 2026-11-02 → 2026-11-08 (+6d) |  | 218.35d → 213.9d |
| TAEXSWCL070006 | Leakage Test | 2026-11-25 → 2026-11-30 (+5d) | 2026-11-29 → 2026-12-03 (+4d) |  | 208.35d → 204.15d |
| 5 | **Storm Networks** |  | 2027-02-10 → 2027-02-17 (+7d) |  |  |
| TAEXSTCL0700011 | Excavation works for Trench Part 01 | 2026-10-11 → 2026-10-18 (+7d) | 2026-10-15 → 2026-10-22 (+7d) |  | 12.98d → 15.33d |
| TAEXSTCL0700021 | Bedding Works Part 01 | 2026-10-15 → 2026-10-22 (+7d) | 2026-10-17 → 2026-10-24 (+7d) |  | 88.97d → 84.45d |
| TAEXSTCL0700031 | Install GRP Pipes & Fittings Part 01 | 2026-10-17 → 2026-10-24 (+7d) | 2026-10-22 → 2026-10-29 (+7d) |  | 88.97d → 84.45d |
| TAEXSTCL0700041 | Backfilling Works for Trench Part 01 | 2026-10-31 → 2026-11-07 (+7d) | 2026-11-09 → 2026-11-16 (+7d) |  | 88.97d → 84.45d |
| TAEXSTCL0700051 | Manhole Installation with backfilling Part 01 | 2026-11-28 → 2026-12-05 (+7d) | 2026-12-03 → 2026-12-10 (+7d) |  | 77.44d → 72.92d |
| TAEXSTCL070006 | Install Catch Basin with UPVC Pipes & Fittings | 2027-01-26 → 2027-02-02 (+7d) | 2027-02-07 → 2027-02-14 (+7d) |  | 31.19d → 26.67d |
| TAEXSTCL070007 | Leakage Test | 2027-02-07 → 2027-02-14 (+7d) | 2027-02-10 → 2027-02-17 (+7d) |  | 31.19d → 26.67d |
| 12 | **Road Works** |  | 2027-07-28 → 2027-07-27 (-1d) |  |  |
| TAEXRDCL0800011 | Road Excavation and Disposal Part 01 | 2027-02-24 → 2027-03-03 (+7d) | 2027-03-02 → 2027-03-09 (+7d) |  | 40.19d → 35.67d |
| TAEXRDCL0800021 | Backfilling Works for Road Part 01 | 2027-03-02 → 2027-03-09 (+7d) | 2027-03-10 → 2027-03-17 (+7d) |  | 40.19d → 35.67d |
| TAEXRDCL0800031 | Subgrade Works Part 01 | 2027-03-10 → 2027-03-17 (+7d) | 2027-03-15 → 2027-03-22 (+7d) |  | 40.19d → 35.67d |
| TAEXRDCL080004 | ABC aggregate Base Course Works | 2027-03-15 → 2027-03-22 (+7d) | 2027-03-20 → 2027-03-27 (+7d) |  | 40.19d → 35.67d |
| TAEXRDCL080005 | MBC1 layer | 2027-03-20 → 2027-03-27 (+7d) | 2027-03-21 → 2027-03-28 (+7d) |  | 40.19d → 35.67d |
| TAEXRDCL080006 | BBC Base Course | 2027-03-21 → 2027-03-28 (+7d) | 2027-03-25 → 2027-04-01 (+7d) |  | 40.19d → 35.67d |
| TAEXRDCL080008 | Precast Concret Kerps | 2027-06-09 → 2027-06-08 (-1d) | 2027-06-26 → 2027-06-24 (-2d) |  | 2.35d → 3.95d |
| TAEXRDCL080007 | BWC Asphalt Wearing Course with RC | 2027-06-26 → 2027-06-24 (-2d) | 2027-06-27 → 2027-06-26 (-1d) |  | 4.35d → 5.95d |
| TAEXRDCL080009 | Precast Interlock Works | 2027-06-27 → 2027-06-26 (-1d) | 2027-07-17 → 2027-07-15 (-2d) |  | 4.35d → 5.95d |
| TAEXRDCL080010 | Stone Paving works | 2027-07-17 → 2027-07-15 (-2d) | 2027-07-25 → 2027-07-24 (-1d) |  | 4.35d → 5.95d |
| TAEXRDCL080011 | Road Marking | 2027-07-25 → 2027-07-24 (-1d) | 2027-07-26 → 2027-07-25 (-1d) |  | 4.35d → 5.95d |
| TAEXRDCL080012 | Traffic Sinage | 2027-07-26 → 2027-07-25 (-1d) | 2027-07-28 → 2027-07-27 (-1d) |  | 4.35d → 5.95d |
| 2 | **Telecommunication Works** | 2027-05-25 → 2027-06-01 (+7d) | 2027-07-04 → 2027-07-11 (+7d) |  |  |
| TAEXTCCL080001 | Trench Cut off | 2027-05-25 → 2027-06-01 (+7d) | 2027-06-06 → 2027-06-13 (+7d) |  | -5.61d → -11.61d |
| TAEXTCCL080002 | Drawpit and PVC Pipes Installation | 2027-06-09 → 2027-06-16 (+7d) | 2027-06-15 → 2027-06-22 (+7d) |  | -8.27d → -14.27d |
| TAEXTCCL080003 | Road Crossing Ducts | 2027-06-15 → 2027-06-22 (+7d) | 2027-06-17 → 2027-06-24 (+7d) |  | 23.73d → 17.73d |
| TAEXTCCL080004 | Trench Backfilling | 2027-06-17 → 2027-06-24 (+7d) | 2027-07-04 → 2027-07-11 (+7d) |  | 23.73d → 17.73d |
| 19 | **CCTV Works** | 2027-05-18 → 2027-05-25 (+7d) | 2027-07-11 → 2027-07-18 (+7d) |  |  |
| TAEXCCCL080001 | Pipe Installation with manhole | 2027-05-18 → 2027-05-25 (+7d) | 2027-05-27 → 2027-06-03 (+7d) |  | -2.55d → -8.55d |
| TAEXCCCL080002 | CCTV Swiches Lighting panels Installation | 2027-05-27 → 2027-06-03 (+7d) | 2027-06-12 → 2027-06-19 (+7d) |  | 27.45d → 21.45d |
| TAEXCCCL080003 | Cable laying and connected with Panels | 2027-06-12 → 2027-06-19 (+7d) | 2027-06-23 → 2027-06-30 (+7d) |  | 27.45d → 21.45d |
| TAEXCCCL080004 | Pole Installation with IP Outdoor CCTV POE Camera | 2027-06-23 → 2027-06-30 (+7d) | 2027-07-11 → 2027-07-18 (+7d) |  | 27.45d → 21.45d |

| ID | Task | Start | Finish | Complete | Total float |
| --- | --- | --- | --- | --- | --- |
| 3 | **Potable Networks** |  | 2027-04-26 → 2027-04-29 (+3d) |  |  |
| TAEXPTCL080001 | Excavation works for Trench |  | 2026-10-25 → 2026-10-31 (+6d) | 64% → 75% | 68.36d → 68.04d |
| TAEXPTCL080003 | Install Pipes & Fittings |  | 2027-01-17 → 2027-01-20 (+3d) | 55% → 60% | 127.83d → 125.46d |
| TAEXPTCL080002 | Bedding Works |  | 2026-10-26 → 2026-11-01 (+6d) | 55% → 60% | 169.38d → 164.91d |
| TAEXPTCL080006 | Install fire hydrent |  | 2027-02-15 → 2027-02-20 (+5d) |  | 111.28d → 110.01d |
| TAEXPTCL080007 | Valve Chamber works |  | 2027-04-21 → 2027-04-25 (+4d) |  | 68.36d → 68.04d |
| TAEXPTCL080004 | Backfilling Works for Trench | 2027-01-17 → 2027-01-20 (+3d) | 2027-02-03 → 2027-02-07 (+4d) |  | 127.83d → 125.46d |
| TAEXPTCL080005 | Install Valves with fittings | 2027-02-04 → 2027-02-08 (+4d) | 2027-02-09 → 2027-02-13 (+4d) |  | 122.9d → 120.13d |
| TAEXPTCL080008 | Inspection Test | 2027-04-21 → 2027-04-25 (+4d) | 2027-04-26 → 2027-04-29 (+3d) |  | 82.36d → 79.04d |
| 4 | **TSE Networks** |  | 2027-05-01 → 2027-05-04 (+3d) |  |  |
| TAEXTSCL080001 | Excavation works for Trench |  | 2026-11-07 → 2026-11-14 (+7d) | 49% → 60% | 62.54d → 57.42d |
| TAEXTSCL080005 | Install Valves with fittings |  | 2026-12-06 → 2026-12-13 (+7d) |  | 189.44d → 184.32d |
| TAEXTSCL080006 | Valve Chamber works |  | 2026-12-22 → 2026-12-28 (+6d) |  | 189.44d → 184.32d |
| TAEXTSCL080002 | Bedding Works | 2026-11-07 → 2026-10-10 A (-28d) | 2026-11-09 → 2026-11-16 (+7d) |  | 159.04d → 154.47d |
| TAEXTSCL080003 | Install Pipes & Fittings | 2026-11-09 → 2026-11-16 (+7d) | 2026-11-18 → 2026-11-25 (+7d) |  | 159.04d → 154.47d |
| TAEXTSCL080004 | Backfilling Works for Trench | 2026-11-18 → 2026-11-25 (+7d) | 2026-12-06 → 2026-12-13 (+7d) |  | 189.44d → 184.32d |
| TAEXTSCL080007 | Inspection Test | 2027-04-26 → 2027-04-29 (+3d) | 2027-05-01 → 2027-05-04 (+3d) |  | 82.36d → 79.04d |
| 16 | **Sewerage Networks** |  | 2026-11-25 → 2026-12-02 (+7d) |  |  |
| TAEXSWCL080006 | Leakage Test |  | 2026-11-25 → 2026-12-02 (+7d) | 10% → 30% | 211.15d → 205.75d |
| TAEXSWCL0800051 | Manhole Installation with backfilling Part 01 |  | 2026-11-23 → 2026-11-30 (+7d) |  | 211.15d → 205.75d |
| 5 | **Storm Networks** |  | 2027-01-13 → 2027-01-20 (+7d) |  |  |
| TAEXSTCL0800051 | Manhole Installation with backfilling Part 01 |  | 2026-11-30 → 2026-12-07 (+7d) |  | 6.85d → 8.45d |
| TAEXSTCL080007 | Leakage Test |  | 2027-01-13 → 2027-01-20 (+7d) | 15% → 30% | 92.39d → 88.32d |
| TAEXSTCL0800011 | Excavation works for Trench Part 01 |  | 2026-10-15 → 2026-10-10 A (-5d) | 85% → 100% | 12.98d → none |
| TAEXSTCL0800021 | Bedding Works Part 01 |  | 2026-10-15 → 2026-10-22 (+7d) |  | 12.98d → 15.33d |
| TAEXSTCL0800031 | Install GRP Pipes & Fittings Part 01 | 2026-10-15 → 2026-10-22 (+7d) | 2026-10-24 → 2026-10-31 (+7d) |  | 12.98d → 15.33d |
| TAEXSTCL0800041 | Backfilling Works for Trench Part 01 | 2026-11-02 → 2026-11-09 (+7d) | 2026-11-10 → 2026-11-17 (+7d) |  | 12.98d → 15.33d |
| TAEXSTCL080006 | Install Catch Basin with UPVC Pipes & Fittings | 2026-11-30 → 2026-12-07 (+7d) | 2026-12-13 → 2026-12-20 (+7d) |  | 6.85d → 8.45d |
| 12 | **Road Works** |  | 2027-07-31 → 2027-07-29 (-2d) |  |  |
| TAEXRDCL090004 | ABC aggregate Base Course Works | 2027-02-20 → 2027-02-25 (+5d) | 2027-02-25 → 2027-03-03 (+6d) |  | 61.84d → 57.47d |
| TAEXRDCL090005 | MBC1 layer | 2027-02-25 → 2027-03-03 (+6d) | 2027-02-27 → 2027-03-04 (+5d) |  | 61.84d → 57.47d |
| TAEXRDCL090006 | BBC Base Course | 2027-02-27 → 2027-03-04 (+5d) | 2027-03-01 → 2027-03-07 (+6d) |  | 61.84d → 57.47d |
| TAEXRDCL090008 | Precast Concret Kerps | 2027-06-26 → 2027-06-24 (-2d) | 2027-07-11 → 2027-07-10 (-1d) |  | 2.35d → 3.95d |
| TAEXRDCL090007 | BWC Asphalt Wearing Course with RC | 2027-07-11 → 2027-07-10 (-1d) | 2027-07-12 → 2027-07-11 (-1d) |  | 2.35d → 3.95d |
| TAEXRDCL090009 | Precast Interlock Works | 2027-07-12 → 2027-07-11 (-1d) | 2027-07-26 → 2027-07-25 (-1d) |  | 2.35d → 3.95d |
| TAEXRDCL090010 | Stone Paving works | 2027-07-26 → 2027-07-25 (-1d) | 2027-07-28 → 2027-07-27 (-1d) |  | 2.35d → 3.95d |
| TAEXRDCL090011 | Road Marking | 2027-07-28 → 2027-07-27 (-1d) | 2027-07-29 → 2027-07-28 (-1d) |  | 2.35d → 3.95d |
| TAEXRDCL090012 | Traffic Sinage | 2027-07-29 → 2027-07-28 (-1d) | 2027-07-31 → 2027-07-29 (-2d) |  | 2.35d → 3.95d |
| 2 | **Telecommunication Works** | 2027-06-06 → 2027-06-13 (+7d) | 2027-07-04 → 2027-07-11 (+7d) |  |  |
| TAEXTCCL090001 | Trench Cut off | 2027-06-06 → 2027-06-13 (+7d) | 2027-06-12 → 2027-06-19 (+7d) |  | -5.61d → -11.61d |
| TAEXTCCL090002 | Drawpit and PVC Pipes Installation | 2027-06-15 → 2027-06-22 (+7d) | 2027-06-20 → 2027-06-27 (+7d) |  | -8.27d → -14.27d |
| TAEXTCCL090003 | Road Crossing Ducts | 2027-06-20 → 2027-06-27 (+7d) | 2027-06-22 → 2027-06-29 (+7d) |  | 23.73d → 17.73d |
| TAEXTCCL090004 | Trench Backfilling | 2027-06-22 → 2027-06-29 (+7d) | 2027-07-04 → 2027-07-11 (+7d) |  | 23.73d → 17.73d |
| 20 | **CCTV Works** | 2027-05-27 → 2027-06-03 (+7d) | 2027-07-10 → 2027-07-17 (+7d) |  |  |
| TAEXCCCL090001 | Pipe Installation with manhole | 2027-05-27 → 2027-06-03 (+7d) | 2027-06-05 → 2027-06-12 (+7d) |  | -2.55d → -8.55d |
| TAEXCCCL090002 | CCTV Swiches Lighting panels Installation | 2027-06-05 → 2027-06-12 (+7d) | 2027-06-16 → 2027-06-23 (+7d) |  | 28.45d → 22.45d |
| TAEXCCCL090003 | Cable laying and connected with Panels | 2027-06-16 → 2027-06-23 (+7d) | 2027-06-26 → 2027-07-03 (+7d) |  | 28.45d → 22.45d |
| TAEXCCCL090004 | Pole Installation with IP Outdoor CCTV POE Camera | 2027-06-26 → 2027-07-03 (+7d) | 2027-07-10 → 2027-07-17 (+7d) |  | 28.45d → 22.45d |
| 3 | **Potable Networks** |  | 2027-05-11 → 2027-05-15 (+4d) |  |  |
| TAEXPTCL090005 | Install Valves with fittings |  | 2027-01-24 → 2027-01-27 (+3d) |  | 122.9d → 120.13d |
| TAEXPTCL090006 | Install fire hydrent | 2027-01-18 → 2027-01-23 (+5d) | 2027-01-25 → 2027-01-30 (+5d) |  | 89.58d → 89.26d |
| TAEXPTCL090007 | Valve Chamber works | 2027-04-21 → 2027-04-25 (+4d) | 2027-05-08 → 2027-05-11 (+3d) |  | 68.36d → 68.04d |
| TAEXPTCL090008 | Inspection Test | 2027-05-08 → 2027-05-11 (+3d) | 2027-05-11 → 2027-05-15 (+4d) |  | 73.36d → 70.04d |
| 4 | **TSE Networks** |  | 2027-05-16 → 2027-05-22 (+6d) |  |  |
| TAEXTSCL090005 | Install Valves with fittings |  | 2027-04-26 → 2027-05-02 (+6d) |  | 66.66d → 61.54d |
| TAEXTSCL0900011 | Excavation works for Trench Part 01 | 2026-10-13 → 2026-10-20 (+7d) | 2026-10-27 → 2026-11-03 (+7d) |  | 10.44d → 12.04d |
| TAEXTSCL090002 | Bedding Works | 2026-10-27 → 2026-11-03 (+7d) | 2026-10-29 → 2026-11-05 (+7d) |  | 43.09d → 45.29d |
| TAEXTSCL090003 | Install Pipes & Fittings | 2026-11-18 → 2026-11-25 (+7d) | 2026-11-25 → 2026-12-02 (+7d) |  | 159.04d → 154.47d |
| TAEXTSCL090004 | Backfilling Works for Trench | 2026-11-25 → 2026-12-02 (+7d) | 2026-12-09 → 2026-12-16 (+7d) |  | 159.04d → 154.47d |
| TAEXTSCL090006 | Valve Chamber works | 2027-04-26 → 2027-05-02 (+6d) | 2027-05-12 → 2027-05-18 (+6d) |  | 69.81d → 64.69d |
| TAEXTSCL090007 | Inspection Test | 2027-05-12 → 2027-05-18 (+6d) | 2027-05-16 → 2027-05-22 (+6d) |  | 69.81d → 64.69d |
| 17 | **Sewerage Networks** |  | 2026-12-01 → 2026-12-05 (+4d) |  |  |
| TAEXSWCL090006 | Leakage Test |  | 2026-12-01 → 2026-12-05 (+4d) |  | 206.85d → 203.25d |
| TAEXSWCL0900051 | Manhole Installation with backfilling Part 01 | 2026-11-22 → 2026-10-10 A (-43d) | 2026-11-29 → 2026-12-03 (+4d) | 0% → 40% | 206.85d → 203.25d |
| TAEXSWCL0900041 | Backfilling Works for Trench Part 01 | 2026-10-05 → 2026-10-12 (+7d) | 2026-10-13 → 2026-10-20 (+7d) |  | 246.5d → 240.5d |
| 5 | **Storm Networks** |  | 2026-12-29 → 2027-01-04 (+6d) |  |  |
| TAEXSTCL090005 | Manhole Installation with backfilling |  | 2026-11-29 → 2026-12-06 (+7d) | 90% → 95% | 18.15d → 20.35d |
| TAEXSTCL090007 | Leakage Test |  | 2026-12-29 → 2027-01-04 (+6d) | 80% → 85% | 61.84d → 57.47d |
| TAEXSTCL090006 | Install Catch Basin with UPVC Pipes & Fittings | 2026-12-17 → 2026-12-24 (+7d) | 2026-12-28 → 2027-01-04 (+7d) |  | 2.35d → 3.95d |
| 4 | **Upgrade Local 06** | 2027-06-13 → 2026-10-10 (-246d) | 2027-08-31 → 2027-08-28 (-3d) |  |  |

| ID | Task | Start | Finish | Complete | Total float |
| --- | --- | --- | --- | --- | --- |
| 22 | **Electrical Works** | 2027-07-21 → 2026-10-10 (-284d) | 2027-08-31 → 2027-08-28 (-3d) |  |  |
| TAEXELCU060002 | Drawpit and PVC Pipes Installation | 2027-08-02 → 2026-10-10 A (-296d) | 2027-08-09 → 2027-08-07 (-2d) | 0% → 33% | -24.62d → -21.69d |
| TAEXELCU060003 | Road Crossing Ducts | 2027-08-09 → 2026-10-10 A (-303d) | 2027-08-12 → 2027-08-09 (-3d) | 0% → 33% | -24.62d → -21.69d |
| TAEXELCU060006 | Poles RC Foundation | 2027-08-09 → 2027-08-07 (-2d) | 2027-08-14 → 2027-08-11 (-3d) |  | -16.62d → -14.68d |
| TAEXELCU060004 | Trench Backfilling | 2027-08-12 → 2027-08-09 (-3d) | 2027-08-24 → 2027-08-21 (-3d) |  | -24.62d → -21.69d |
| TAEXELCU060008 | Lighting Pole Installation with Luminares | 2027-08-14 → 2027-08-11 (-3d) | 2027-08-21 → 2027-08-18 (-3d) |  | -16.62d → -14.68d |
| TAEXELCU060005 | Cables Pulling | 2027-08-24 → 2027-08-21 (-3d) | 2027-08-29 → 2027-08-25 (-4d) |  | -24.62d → -21.69d |
| TAEXELCU060007 | Earthing cables | 2027-08-29 → 2027-08-25 (-4d) | 2027-08-31 → 2027-08-28 (-3d) |  | -24.62d → -21.69d |
| 23 | **CCTV Works** | 2027-06-13 → 2027-06-20 (+7d) | 2027-07-26 → 2027-08-02 (+7d) |  |  |
| TAEXCCCU060001 | Pipe Installation with manhole | 2027-06-13 → 2027-06-20 (+7d) | 2027-06-22 → 2027-06-29 (+7d) |  | 2.45d → -3.55d |
| TAEXCCCU060002 | CCTV Swiches Lighting panels Installation | 2027-06-22 → 2027-06-29 (+7d) | 2027-07-04 → 2027-07-11 (+7d) |  | 14.45d → 8.45d |
| TAEXCCCU060003 | Cable laying and connected with Panels | 2027-07-04 → 2027-07-11 (+7d) | 2027-07-14 → 2027-07-21 (+7d) |  | 14.45d → 8.45d |
| TAEXCCCU060004 | Pole Installation with IP Outdoor CCTV POE Camera | 2027-07-14 → 2027-07-21 (+7d) | 2027-07-26 → 2027-08-02 (+7d) |  | 14.45d → 8.45d |
| 7 | **Upgrade Local 07** |  | 2027-09-02 → 2027-08-31 (-2d) |  |  |
| 23 | **Electrical Works** |  | 2027-09-02 → 2027-08-31 (-2d) |  |  |
| TAEXELCU070003 | Road Crossing Ducts |  |  | 33% → 43% | -22.98d → -22.22d |
| TAEXELCU070002 | Drawpit and PVC Pipes Installation |  |  | 33% → 43% | -22.98d → -22.22d |
| TAEXELCU070007 | Earthing cables | 2027-08-31 → 2027-08-29 (-2d) | 2027-09-02 → 2027-08-31 (-2d) |  | -24.62d → -22.22d |
| 24 | **CCTV Works** | 2027-06-22 → 2027-06-29 (+7d) | 2027-08-04 → 2027-08-11 (+7d) |  |  |
| TAEXCCCU070001 | Pipe Installation with manhole | 2027-06-22 → 2027-06-29 (+7d) | 2027-07-01 → 2027-07-08 (+7d) |  | 2.45d → -3.55d |
| TAEXCCCU070002 | CCTV Swiches Lighting panels Installation | 2027-07-01 → 2027-07-08 (+7d) | 2027-07-13 → 2027-07-20 (+7d) |  | 6.45d → 0.45d |
| TAEXCCCU070003 | Cable laying and connected with Panels | 2027-07-13 → 2027-07-20 (+7d) | 2027-07-24 → 2027-07-31 (+7d) |  | 6.45d → 0.45d |
| TAEXCCCU070004 | Pole Installation with IP Outdoor CCTV POE Camera | 2027-07-24 → 2027-07-31 (+7d) | 2027-08-04 → 2027-08-11 (+7d) |  | 6.45d → 0.45d |
| 8 | **Upgrade Local 08** |  | 2027-09-04 → 2027-09-02 (-2d) |  |  |
| 24 | **Electrical Works** |  | 2027-09-04 → 2027-09-02 (-2d) |  |  |
| TAEXELCU080007 | Earthing cables | 2027-09-02 → 2027-08-31 (-2d) | 2027-09-04 → 2027-09-02 (-2d) |  | -24.62d → -22.22d |
| 25 | **CCTV Works** | 2027-06-22 → 2027-06-29 (+7d) | 2027-08-04 → 2027-08-11 (+7d) |  |  |
| TAEXCCCU080001 | Pipe Installation with manhole | 2027-06-22 → 2027-06-29 (+7d) | 2027-07-01 → 2027-07-08 (+7d) |  | 2.45d → -3.55d |
| TAEXCCCU080002 | CCTV Swiches Lighting panels Installation | 2027-07-01 → 2027-07-08 (+7d) | 2027-07-13 → 2027-07-20 (+7d) |  | 6.45d → 0.45d |
| TAEXCCCU080003 | Cable laying and connected with Panels | 2027-07-13 → 2027-07-20 (+7d) | 2027-07-24 → 2027-07-31 (+7d) |  | 6.45d → 0.45d |
| TAEXCCCU080004 | Pole Installation with IP Outdoor CCTV POE Camera | 2027-07-24 → 2027-07-31 (+7d) | 2027-08-04 → 2027-08-11 (+7d) |  | 6.45d → 0.45d |
| 9 | **Upgrade Local 09** |  | 2027-09-06 → 2027-09-04 (-2d) |  |  |
| 26 | **Electrical Works** |  | 2027-09-06 → 2027-09-04 (-2d) |  |  |
| TAEXELCU090007 | Earthing cables | 2027-09-04 → 2027-09-02 (-2d) | 2027-09-06 → 2027-09-04 (-2d) |  | -24.62d → -22.22d |
| 1 | **CCTV Works** | 2027-07-01 → 2027-07-08 (+7d) | 2027-08-14 → 2027-08-21 (+7d) |  |  |
| TAEXCCCU090001 | Pipe Installation with manhole | 2027-07-01 → 2027-07-08 (+7d) | 2027-07-10 → 2027-07-17 (+7d) |  | 2.45d → -3.55d |
| TAEXCCCU090002 | CCTV Swiches Lighting panels Installation | 2027-07-10 → 2027-07-17 (+7d) | 2027-07-21 → 2027-07-28 (+7d) |  | 2.45d → -3.55d |
| TAEXCCCU090003 | Cable laying and connected with Panels | 2027-07-21 → 2027-07-28 (+7d) | 2027-08-02 → 2027-08-09 (+7d) |  | 2.45d → -3.55d |
| TAEXCCCU090004 | Pole Installation with IP Outdoor CCTV POE Camera | 2027-08-02 → 2027-08-09 (+7d) | 2027-08-14 → 2027-08-21 (+7d) |  | 2.45d → -3.55d |
| 10 | **Upgrade Local 12** |  | 2027-09-11 → 2027-09-08 (-3d) |  |  |
| 18 | **Road works** | 2027-03-14 → 2027-03-21 (+7d) | 2027-06-20 → 2027-06-27 (+7d) |  |  |
| TAEXRDCU120002 | Precast Concret Kerps | 2027-03-14 → 2027-03-21 (+7d) | 2027-04-04 → 2027-04-11 (+7d) |  | 37.21d → 31.21d |
| TAEXRDCU120001 | BWC Asphalt Wearing Course with RC | 2027-05-20 → 2027-05-27 (+7d) | 2027-05-22 → 2027-05-29 (+7d) |  | 37.21d → 31.21d |
| TAEXRDCU120003 | Precast Interlock Works | 2027-05-22 → 2027-05-29 (+7d) | 2027-06-09 → 2027-06-16 (+7d) |  | 37.21d → 31.21d |
| TAEXRDCU120004 | Stone Paving works | 2027-06-09 → 2027-06-16 (+7d) | 2027-06-15 → 2027-06-22 (+7d) |  | 37.21d → 31.21d |
| TAEXRDCU120005 | Road Marking | 2027-06-15 → 2027-06-22 (+7d) | 2027-06-16 → 2027-06-23 (+7d) |  | 37.21d → 31.21d |
| TAEXRDCU120006 | Traffic Sinage | 2027-06-16 → 2027-06-23 (+7d) | 2027-06-20 → 2027-06-27 (+7d) |  | 37.21d → 31.21d |
| 19 | **Electrical Works** |  | 2027-09-11 → 2027-09-08 (-3d) |  |  |
| TAEXELCU120001 | Trench Cut off |  |  | 32% → 40% | -24.67d → -24.71d |
| TAEXELCU120005 | Cables Pulling |  | 2027-06-13 → 2027-06-12 (-1d) |  | 49.71d → 50.52d |
| TAEXELCU120004 | Trench Backfilling |  | 2027-06-06 → 2027-06-05 (-1d) | 27% → 32% | 49.71d → 50.52d |
| TAEXELCU120007 | Earthing cables | 2027-09-06 → 2027-09-04 (-2d) | 2027-09-11 → 2027-09-08 (-3d) |  | -24.62d → -22.22d |
| 1 | **Telecommunication Works** | 2027-04-11 → 2027-04-18 (+7d) | 2027-07-25 → 2027-08-01 (+7d) |  |  |
| TAEXTCCU120001 | Trench Cut off | 2027-04-11 → 2027-04-18 (+7d) | 2027-04-28 → 2027-05-05 (+7d) |  | -5.61d → -11.61d |
| TAEXTCCU120002 | Drawpit and PVC Pipes Installation | 2027-06-20 → 2027-06-27 (+7d) | 2027-06-30 → 2027-07-07 (+7d) |  | -8.27d → -14.27d |
| TAEXTCCU120003 | Road Crossing Ducts | 2027-06-30 → 2027-07-07 (+7d) | 2027-07-05 → 2027-07-12 (+7d) |  | 5.73d → -0.27d |
| TAEXTCCU120004 | Trench Backfilling | 2027-07-05 → 2027-07-12 (+7d) | 2027-07-25 → 2027-08-01 (+7d) |  | 5.73d → -0.27d |
| 15 | **CCTV Works** | 2027-03-28 → 2027-04-04 (+7d) | 2027-05-23 → 2027-05-30 (+7d) |  |  |
| TAEXCCCU120001 | Pipe Installation with manhole | 2027-03-28 → 2027-04-04 (+7d) | 2027-04-10 → 2027-04-17 (+7d) |  | -2.55d → -8.55d |
| TAEXCCCU120002 | CCTV Swiches Lighting panels Installation | 2027-04-10 → 2027-04-17 (+7d) | 2027-04-24 → 2027-05-01 (+7d) |  | 69.45d → 63.45d |
| TAEXCCCU120003 | Cable laying and connected with Panels | 2027-04-24 → 2027-05-01 (+7d) | 2027-05-06 → 2027-05-13 (+7d) |  | 69.45d → 63.45d |
| TAEXCCCU120004 | Pole Installation with IP Outdoor CCTV POE Camera | 2027-05-06 → 2027-05-13 (+7d) | 2027-05-23 → 2027-05-30 (+7d) |  | 69.45d → 63.45d |
| 2 | **Potable Networks** | 2026-11-03 → 2026-11-07 (+4d) | 2027-03-10 → 2027-03-14 (+4d) |  |  |
| TAEXPTCU120001 | Excavation works for Trench | 2026-11-03 → 2026-11-07 (+4d) | 2026-11-17 → 2026-11-21 (+4d) |  | 68.36d → 68.04d |
| TAEXPTCU120002 | Bedding Works | 2026-11-17 → 2026-11-21 (+4d) | 2026-11-19 → 2026-11-23 (+4d) |  | 107.36d → 107.04d |
| TAEXPTCU120003 | Install Pipes & Fittings | 2026-12-26 → 2026-12-29 (+3d) | 2027-01-04 → 2027-01-07 (+3d) |  | 76.36d → 76.04d |
| TAEXPTCU120004 | Backfilling Works for Trench | 2027-01-04 → 2027-01-07 (+3d) | 2027-01-25 → 2027-01-28 (+3d) |  | 76.36d → 76.04d |
| TAEXPTCU120005 | Install Valves with fittings | 2027-01-20 → 2027-01-24 (+4d) | 2027-01-25 → 2027-01-28 (+3d) |  | 76.36d → 76.04d |
| TAEXPTCU120006 | Install fire hydrent | 2027-01-25 → 2027-01-28 (+3d) | 2027-02-04 → 2027-02-08 (+4d) |  | 76.36d → 76.04d |
| TAEXPTCU120007 | Valve Chamber works | 2027-02-14 → 2027-02-17 (+3d) | 2027-03-04 → 2027-03-08 (+4d) |  | 68.36d → 68.04d |

| ID | Task | Start | Finish | Complete | Total float |
| --- | --- | --- | --- | --- | --- |
| TAEXPTCU120008 | Inspection Test | 2027-03-04 → 2027-03-08 (+4d) | 2027-03-10 → 2027-03-14 (+4d) |  | 126.46d → 123.14d |
| 3 | **TSE Networks** |  | 2027-05-24 → 2027-05-30 (+6d) |  |  |
| TAEXTSCU120005 | Install Valves with fittings |  | 2027-05-02 → 2027-05-09 (+7d) |  | 62.54d → 57.42d |
| TAEXTSCU120006 | Valve Chamber works |  | 2027-05-18 → 2027-05-24 (+6d) |  | 62.54d → 57.42d |
| TAEXTSCU120001 | Excavation works for Trench | 2027-01-05 → 2027-01-12 (+7d) | 2027-01-31 → 2027-02-07 (+7d) |  | 62.54d → 57.42d |
| TAEXTSCU120002 | Bedding Works | 2027-01-31 → 2027-02-07 (+7d) | 2027-02-02 → 2027-02-09 (+7d) |  | 112.54d → 107.42d |
| TAEXTSCU120003 | Install Pipes & Fittings | 2027-04-01 → 2027-04-08 (+7d) | 2027-04-11 → 2027-04-18 (+7d) |  | 62.54d → 57.42d |
| TAEXTSCU120004 | Backfilling Works for Trench | 2027-04-11 → 2027-04-18 (+7d) | 2027-05-02 → 2027-05-09 (+7d) |  | 62.54d → 57.42d |
| TAEXTSCU120007 | Inspection Test | 2027-05-18 → 2027-05-24 (+6d) | 2027-05-24 → 2027-05-30 (+6d) |  | 62.54d → 57.42d |
| 12 | **Sewerage Networks** | 2026-11-04 → 2026-11-10 (+6d) | 2027-01-17 → 2027-01-23 (+6d) |  |  |
| TAEXSWCU120001 | Excavation works for Trench | 2026-11-04 → 2026-11-10 (+6d) | 2026-11-23 → 2026-11-29 (+6d) |  | 131.03d → 131.47d |
| TAEXSWCU120002 | Bedding Works | 2026-11-23 → 2026-11-29 (+6d) | 2026-11-28 → 2026-12-03 (+5d) |  | 166.48d → 161.88d |
| TAEXSWCU120003 | Install GRP Pipes & Fittings | 2026-11-28 → 2026-12-03 (+5d) | 2026-12-14 → 2026-12-20 (+6d) |  | 166.48d → 161.88d |
| TAEXSWCU120004 | Backfilling Works for Trench | 2026-12-16 → 2026-12-22 (+6d) | 2026-12-31 → 2027-01-06 (+6d) |  | 166.48d → 161.88d |
| TAEXSWCU120005 | Manhole Installation with backfilling | 2026-12-29 → 2027-01-04 (+6d) | 2027-01-12 → 2027-01-18 (+6d) |  | 166.48d → 161.88d |
| TAEXSWCU120006 | Leakage Test | 2027-01-12 → 2027-01-18 (+6d) | 2027-01-17 → 2027-01-23 (+6d) |  | 166.48d → 161.88d |
| 4 | **Storm Networks** | 2027-05-18 → 2027-05-19 (+1d) | 2027-08-04 → 2027-08-05 (+1d) |  |  |
| TAEXSTCU120001 | Excavation works for Trench | 2027-05-18 → 2027-05-19 (+1d) | 2027-06-08 → 2027-06-09 (+1d) |  | 7.64d → 6.64d |
| TAEXSTCU120002 | Bedding Works | 2027-06-08 → 2027-06-09 (+1d) | 2027-06-13 → 2027-06-14 (+1d) |  | 7.64d → 6.64d |
| TAEXSTCU120003 | Install GRP Pipes & Fittings | 2027-06-13 → 2027-06-14 (+1d) | 2027-06-29 → 2027-06-30 (+1d) |  | 7.64d → 6.64d |
| TAEXSTCU120004 | Backfilling Works for Trench | 2027-07-01 → 2027-07-03 (+2d) | 2027-07-17 → 2027-07-18 (+1d) |  | 7.64d → 6.64d |
| TAEXSTCU120005 | Manhole Installation with backfilling | 2027-07-03 → 2027-07-04 (+1d) | 2027-07-17 → 2027-07-18 (+1d) |  | 7.64d → 6.64d |
| TAEXSTCU120006 | Install Catch Basin with UPVC Pipes & Fittings | 2027-07-17 → 2027-07-18 (+1d) | 2027-07-31 → 2027-08-01 (+1d) |  | 7.64d → 6.64d |
| TAEXSTCU120007 | Leakage Test | 2027-07-31 → 2027-08-01 (+1d) | 2027-08-04 → 2027-08-05 (+1d) |  | 7.64d → 6.64d |
| 11 | **Upgrade Local 14** |  | 2027-09-13 → 2027-09-11 (-2d) |  |  |
| 21 | **Electrical Works** |  | 2027-09-13 → 2027-09-11 (-2d) |  |  |
| TAEXELCU140007 | Earthing cables | 2027-09-11 → 2027-09-08 (-3d) | 2027-09-13 → 2027-09-11 (-2d) |  | -24.62d → -22.22d |
| 22 | **CCTV Works** | 2027-06-13 → 2027-06-20 (+7d) | 2027-07-26 → 2027-08-02 (+7d) |  |  |
| TAEXCCCU140001 | Pipe Installation with manhole | 2027-06-13 → 2027-06-20 (+7d) | 2027-06-21 → 2027-06-28 (+7d) |  | -2.55d → -8.55d |
| TAEXCCCU140002 | CCTV Swiches Lighting panels Installation | 2027-06-21 → 2027-06-28 (+7d) | 2027-07-05 → 2027-07-12 (+7d) |  | -2.55d → -8.55d |
| TAEXCCCU140003 | Cable laying and connected with Panels | 2027-07-05 → 2027-07-12 (+7d) | 2027-07-14 → 2027-07-21 (+7d) |  | 14.45d → 8.45d |
| TAEXCCCU140004 | Pole Installation with IP Outdoor CCTV POE Camera | 2027-07-14 → 2027-07-21 (+7d) | 2027-07-26 → 2027-08-02 (+7d) |  | 14.45d → 8.45d |
| 12 | **Upgrade Local 18** | 2027-07-01 → 2027-07-08 (+7d) | 2027-08-04 → 2027-08-11 (+7d) |  |  |
| 27 | **CCTV Works** | 2027-07-01 → 2027-07-08 (+7d) | 2027-08-04 → 2027-08-11 (+7d) |  |  |
| TAEXCCCU180001 | Pipe Installation with manhole | 2027-07-01 → 2027-07-08 (+7d) | 2027-07-11 → 2027-07-18 (+7d) |  | 6.45d → 0.45d |
| TAEXCCCU180002 | CCTV Swiches Lighting panels Installation | 2027-07-11 → 2027-07-18 (+7d) | 2027-07-21 → 2027-07-28 (+7d) |  | 6.45d → 0.45d |
| TAEXCCCU180003 | Cable laying and connected with Panels | 2027-07-21 → 2027-07-28 (+7d) | 2027-07-29 → 2027-08-05 (+7d) |  | 6.45d → 0.45d |
| TAEXCCCU180004 | Pole Installation with IP Outdoor CCTV POE Camera | 2027-07-29 → 2027-08-05 (+7d) | 2027-08-04 → 2027-08-11 (+7d) |  | 6.45d → 0.45d |
| 13 | **Upgrade Local 20** |  | 2027-09-18 → 2027-09-15 (-3d) |  |  |
| 16 | **Electrical Works** |  | 2027-09-18 → 2027-09-15 (-3d) |  |  |
| TAEXELCU200001 | Trench Cut off |  | 2027-03-24 → 2027-03-25 (+1d) | 36% → 47% | -24.67d → -24.71d |
| TAEXELCU200005 | Cables Pulling |  | 2027-04-25 → 2027-05-02 (+7d) |  | 82.26d → 76.26d |
| TAEXELCU200004 | Trench Backfilling |  | 2027-04-24 → 2027-05-01 (+7d) |  | 82.26d → 76.26d |
| TAEXELCU200002 | Drawpit and PVC Pipes Installation |  | 2027-04-10 → 2027-04-17 (+7d) |  | 81.22d → 75.22d |
| TAEXELCU200003 | Road Crossing Ducts |  | 2027-04-14 → 2027-04-21 (+7d) |  | 82.26d → 76.26d |
| TAEXELCU200006 | Poles RC Foundation | 2027-04-10 → 2027-04-17 (+7d) | 2027-04-18 → 2027-04-25 (+7d) |  | 81.22d → 75.22d |
| TAEXELCU200008 | Lighting Pole Installation with Luminares | 2027-04-18 → 2027-04-25 (+7d) | 2027-04-28 → 2027-05-05 (+7d) |  | 81.22d → 75.22d |
| TAEXELCU200009 | Install Substation & RMU | 2027-04-25 → 2027-05-02 (+7d) | 2027-05-05 → 2027-05-12 (+7d) |  | 82.26d → 76.26d |
| TAEXELCU200007 | Earthing cables | 2027-09-13 → 2027-09-11 (-2d) | 2027-09-18 → 2027-09-15 (-3d) |  | -24.62d → -22.22d |
| 14 | **CCTV Works** | 2027-02-23 → 2027-03-02 (+7d) | 2027-08-15 → 2027-08-22 (+7d) |  |  |
| TAEXCCCU200001 | Pipe Installation with manhole | 2027-02-23 → 2027-03-02 (+7d) | 2027-03-07 → 2027-03-14 (+7d) |  | -2.55d → -8.55d |
| TAEXCCCU200002 | CCTV Swiches Lighting panels Installation | 2027-07-05 → 2027-07-12 (+7d) | 2027-07-20 → 2027-07-27 (+7d) |  | -2.55d → -8.55d |
| TAEXCCCU200003 | Cable laying and connected with Panels | 2027-07-20 → 2027-07-27 (+7d) | 2027-08-01 → 2027-08-08 (+7d) |  | -2.55d → -8.55d |
| TAEXCCCU200004 | Pole Installation with IP Outdoor CCTV POE Camera | 2027-08-01 → 2027-08-08 (+7d) | 2027-08-15 → 2027-08-22 (+7d) |  | -2.55d → -8.55d |
| 1 | **Potable Networks** | 2026-10-05 → 2026-10-12 (+7d) | 2027-01-04 → 2027-01-07 (+3d) |  |  |
| TAEXPTCU200007 | Valve Chamber works | 2026-10-05 → 2026-10-12 (+7d) | 2026-10-24 → 2026-10-31 (+7d) |  | 126.9d → 123.9d |
| TAEXPTCU200008 | Inspection Test | 2026-10-25 → 2026-11-01 (+7d) | 2026-10-29 → 2026-11-05 (+7d) |  | 239d → 233d |
| TAEXPTCU200001 | Excavation works for Trench | 2026-11-17 → 2026-11-21 (+4d) | 2026-11-28 → 2026-12-01 (+3d) |  | 68.36d → 68.04d |
| TAEXPTCU200002 | Bedding Works | 2026-11-28 → 2026-12-01 (+3d) | 2026-11-30 → 2026-12-03 (+3d) |  | 69.36d → 69.04d |
| TAEXPTCU200003 | Install Pipes & Fittings | 2026-11-30 → 2026-12-03 (+3d) | 2026-12-09 → 2026-12-13 (+4d) |  | 69.36d → 69.04d |
| TAEXPTCU200004 | Backfilling Works for Trench | 2026-12-09 → 2026-12-13 (+4d) | 2026-12-28 → 2026-12-31 (+3d) |  | 174.46d → 174.14d |
| TAEXPTCU200005 | Install Valves with fittings | 2026-12-23 → 2026-12-27 (+4d) | 2026-12-28 → 2026-12-31 (+3d) |  | 174.46d → 174.14d |
| TAEXPTCU200006 | Install fire hydrent | 2026-12-28 → 2026-12-31 (+3d) | 2027-01-04 → 2027-01-07 (+3d) |  | 174.46d → 174.14d |
| 2 | **TSE Networks** | 2027-01-31 → 2027-02-07 (+7d) | 2027-04-20 → 2027-04-27 (+7d) |  |  |
| TAEXTSCU200001 | Excavation works for Trench | 2027-01-31 → 2027-02-07 (+7d) | 2027-02-23 → 2027-03-02 (+7d) |  | 62.54d → 57.42d |
| TAEXTSCU200002 | Bedding Works | 2027-02-23 → 2027-03-02 (+7d) | 2027-02-25 → 2027-03-04 (+7d) |  | 79.54d → 74.42d |
| TAEXTSCU200003 | Install Pipes & Fittings | 2027-02-25 → 2027-03-04 (+7d) | 2027-03-07 → 2027-03-14 (+7d) |  | 79.54d → 74.42d |
| TAEXTSCU200004 | Backfilling Works for Trench | 2027-03-07 → 2027-03-14 (+7d) | 2027-03-25 → 2027-04-01 (+7d) |  | 91.04d → 85.92d |
| TAEXTSCU200005 | Install Valves with fittings | 2027-03-21 → 2027-03-28 (+7d) | 2027-03-25 → 2027-04-01 (+7d) |  | 91.04d → 85.92d |
| TAEXTSCU200006 | Valve Chamber works | 2027-03-25 → 2027-04-01 (+7d) | 2027-04-14 → 2027-04-21 (+7d) |  | 91.04d → 85.92d |

| ID | Task | Start | Finish | Complete | Total float |
| --- | --- | --- | --- | --- | --- |
| TAEXTSCU200007 | Inspection Test | 2027-04-14 → 2027-04-21 (+7d) | 2027-04-20 → 2027-04-27 (+7d) |  | 91.04d → 85.92d |
| 3 | **Sewerage Networks** | 2026-11-23 → 2026-11-29 (+6d) | 2027-01-31 → 2027-02-06 (+6d) |  |  |
| TAEXSWCU200001 | Excavation works for Trench | 2026-11-23 → 2026-11-29 (+6d) | 2026-12-10 → 2026-12-16 (+6d) |  | 131.03d → 131.47d |
| TAEXSWCU200002 | Bedding Works | 2026-12-10 → 2026-12-16 (+6d) | 2026-12-14 → 2026-12-20 (+6d) |  | 154.48d → 149.88d |
| TAEXSWCU200003 | Install GRP Pipes & Fittings | 2026-12-14 → 2026-12-20 (+6d) | 2026-12-28 → 2027-01-03 (+6d) |  | 154.48d → 149.88d |
| TAEXSWCU200004 | Backfilling Works for Trench | 2026-12-26 → 2026-12-31 (+5d) | 2027-01-14 → 2027-01-20 (+6d) |  | 154.48d → 149.88d |
| TAEXSWCU200005 | Manhole Installation with backfilling | 2027-01-07 → 2027-01-13 (+6d) | 2027-01-26 → 2027-02-01 (+6d) |  | 154.48d → 149.88d |
| TAEXSWCU200006 | Leakage Test | 2027-01-26 → 2027-02-01 (+6d) | 2027-01-31 → 2027-02-06 (+6d) |  | 154.48d → 149.88d |
| 14 | **Upgrade Local 29** |  | 2027-09-20 → 2027-09-18 (-2d) |  |  |
| 25 | **Road Works** |  | 2027-05-11 → 2027-05-18 (+7d) |  |  |
| TAEXRDCU290002 | MBC1 layer | 2027-02-24 → 2027-03-03 (+7d) | 2027-02-25 → 2027-03-04 (+7d) |  | 37.21d → 31.21d |
| TAEXRDCU290003 | BBC Base Course | 2027-02-25 → 2027-03-04 (+7d) | 2027-03-02 → 2027-03-09 (+7d) |  | 37.21d → 31.21d |
| TAEXRDCU290005 | Precast Concret Kerps | 2027-03-02 → 2027-03-09 (+7d) | 2027-03-14 → 2027-03-21 (+7d) |  | 37.21d → 31.21d |
| TAEXRDCU290004 | BWC Asphalt Wearing Course with RC | 2027-03-14 → 2027-03-21 (+7d) | 2027-03-17 → 2027-03-24 (+7d) |  | 71.21d → 65.21d |
| TAEXRDCU290006 | Precast Interlock Works | 2027-04-27 → 2027-05-04 (+7d) | 2027-05-06 → 2027-05-13 (+7d) |  | 71.21d → 65.21d |
| TAEXRDCU290007 | Stone Paving works | 2027-05-06 → 2027-05-13 (+7d) | 2027-05-09 → 2027-05-16 (+7d) |  | 71.21d → 65.21d |
| TAEXRDCU290008 | Road Marking | 2027-05-09 → 2027-05-16 (+7d) | 2027-05-10 → 2027-05-17 (+7d) |  | 71.21d → 65.21d |
| TAEXRDCU290009 | Traffic Sinage | 2027-05-10 → 2027-05-17 (+7d) | 2027-05-11 → 2027-05-18 (+7d) |  | 71.21d → 65.21d |
| 20 | **Electrical Works** |  | 2027-09-20 → 2027-09-18 (-2d) |  |  |
| TAEXELCU290007 | Earthing cables | 2027-09-18 → 2027-09-15 (-3d) | 2027-09-20 → 2027-09-18 (-2d) |  | -24.62d → -22.22d |
| 1 | **Telecommunication Works** | 2027-06-12 → 2027-06-19 (+7d) | 2027-07-22 → 2027-07-29 (+7d) |  |  |
| TAEXTCCU290001 | Trench Cut off | 2027-06-12 → 2027-06-19 (+7d) | 2027-06-23 → 2027-06-30 (+7d) |  | -2.61d → -8.61d |
| TAEXTCCU290002 | Drawpit and PVC Pipes Installation | 2027-06-30 → 2027-07-07 (+7d) | 2027-07-07 → 2027-07-14 (+7d) |  | -8.27d → -14.27d |
| TAEXTCCU290003 | Road Crossing Ducts | 2027-07-07 → 2027-07-14 (+7d) | 2027-07-11 → 2027-07-18 (+7d) |  | 7.73d → 1.73d |
| TAEXTCCU290004 | Trench Backfilling | 2027-07-11 → 2027-07-18 (+7d) | 2027-07-22 → 2027-07-29 (+7d) |  | 7.73d → 1.73d |
| 21 | **CCTV Works** | 2027-06-05 → 2027-06-12 (+7d) | 2027-07-17 → 2027-07-24 (+7d) |  |  |
| TAEXCCCU290001 | Pipe Installation with manhole | 2027-06-05 → 2027-06-12 (+7d) | 2027-06-13 → 2027-06-20 (+7d) |  | -2.55d → -8.55d |
| TAEXCCCU290002 | CCTV Swiches Lighting panels Installation | 2027-06-13 → 2027-06-20 (+7d) | 2027-06-24 → 2027-07-01 (+7d) |  | 12.45d → 6.45d |
| TAEXCCCU290003 | Cable laying and connected with Panels | 2027-06-24 → 2027-07-01 (+7d) | 2027-07-05 → 2027-07-12 (+7d) |  | 22.45d → 16.45d |
| TAEXCCCU290004 | Pole Installation with IP Outdoor CCTV POE Camera | 2027-07-05 → 2027-07-12 (+7d) | 2027-07-17 → 2027-07-24 (+7d) |  | 22.45d → 16.45d |
| TAEXPTCU290008 | Inspection Test | 2027-05-25 → 2026-10-08 A (-229d) | 2027-05-29 → 2026-10-10 A (-231d) | 0% → 100% | 68.36d → none |
| TAEXPTCU290007 | Valve Chamber works | 2027-05-08 → 2027-05-11 (+3d) | 2027-05-25 → 2027-05-29 (+4d) |  | 68.36d → 68.04d |
| 3 | **TSE Networks** |  | 2027-04-14 → 2027-04-18 (+4d) |  |  |
| TAEXTSCU290007 | Inspection Test | 2027-04-11 → 2026-10-08 A (-185d) | 2027-04-14 → 2026-10-10 A (-186d) | 0% → 100% | 96.04d → none |
| TAEXTSCU290006 | Valve Chamber works | 2027-03-24 → 2027-03-31 (+7d) | 2027-04-11 → 2027-04-18 (+7d) |  | 96.04d → 93.92d |
| 15 | **Upgrade Local 32** |  | 2027-09-25 → 2027-09-22 (-3d) |  |  |
| 17 | **Electrical Works** | 2027-03-24 → 2027-03-25 (+1d) | 2027-09-25 → 2027-09-22 (-3d) |  |  |
| TAEXELCU320001 | Trench Cut off | 2027-03-24 → 2027-03-25 (+1d) | 2027-04-06 → 2027-04-07 (+1d) |  | -24.67d → -24.71d |
| TAEXELCU320002 | Drawpit and PVC Pipes Installation | 2027-04-06 → 2027-04-07 (+1d) | 2027-04-11 → 2027-04-12 (+1d) |  | 80.64d → 79.05d |
| TAEXELCU320003 | Road Crossing Ducts | 2027-04-11 → 2027-04-12 (+1d) | 2027-04-25 → 2027-04-26 (+1d) |  | 83.64d → 82.05d |
| TAEXELCU320006 | Poles RC Foundation | 2027-04-11 → 2027-04-12 (+1d) | 2027-04-19 → 2027-04-20 (+1d) |  | 80.64d → 79.05d |
| TAEXELCU320008 | Lighting Pole Installation with Luminares | 2027-04-19 → 2027-04-20 (+1d) | 2027-04-29 → 2027-05-01 (+2d) |  | 80.64d → 79.05d |
| TAEXELCU320004 | Trench Backfilling | 2027-04-25 → 2027-04-26 (+1d) | 2027-05-13 → 2027-05-15 (+2d) |  | 83.64d → 82.05d |
| TAEXELCU320005 | Cables Pulling | 2027-05-13 → 2027-05-15 (+2d) | 2027-05-18 → 2027-05-19 (+1d) |  | 83.64d → 82.05d |
| TAEXELCU320007 | Earthing cables | 2027-09-20 → 2027-09-18 (-2d) | 2027-09-25 → 2027-09-22 (-3d) |  | -24.62d → -22.22d |
| 4 | **Telecommunication Works** | 2027-03-07 → 2027-03-14 (+7d) | 2027-08-17 → 2027-08-24 (+7d) |  |  |
| TAEXCCCU320001 | Pipe Installation with manhole | 2027-03-07 → 2027-03-14 (+7d) | 2027-03-18 → 2027-03-25 (+7d) |  | -2.55d → -8.55d |
| TAEXCCCU320002 | CCTV Swiches Lighting panels Installation | 2027-07-07 → 2027-07-14 (+7d) | 2027-07-22 → 2027-07-29 (+7d) |  | -8.27d → -14.27d |
| TAEXCCCU320003 | Cable laying and connected with Panels | 2027-07-22 → 2027-07-29 (+7d) | 2027-08-03 → 2027-08-10 (+7d) |  | -4.27d → -10.27d |
| TAEXCCCU320004 | Pole Installation with IP Outdoor CCTV POE Camera | 2027-08-03 → 2027-08-10 (+7d) | 2027-08-17 → 2027-08-24 (+7d) |  | -4.27d → -10.27d |
| 16 | **Potable Networks** | 2026-10-25 → 2026-11-01 (+7d) | 2027-01-14 → 2027-01-18 (+4d) |  |  |
| TAEXPTCU320007 | Valve Chamber works | 2026-10-25 → 2026-11-01 (+7d) | 2026-11-12 → 2026-11-19 (+7d) |  | 126.9d → 123.9d |
| TAEXPTCU320008 | Inspection Test | 2026-11-14 → 2026-11-21 (+7d) | 2026-11-18 → 2026-11-25 (+7d) |  | 217d → 211d |
| TAEXPTCU320001 | Excavation works for Trench | 2026-11-28 → 2026-12-01 (+3d) | 2026-12-08 → 2026-12-12 (+4d) |  | 68.36d → 68.04d |
| TAEXPTCU320002 | Bedding Works | 2026-12-08 → 2026-12-12 (+4d) | 2026-12-10 → 2026-12-14 (+4d) |  | 68.36d → 68.04d |
| TAEXPTCU320003 | Install Pipes & Fittings | 2026-12-10 → 2026-12-14 (+4d) | 2026-12-20 → 2026-12-23 (+3d) |  | 68.36d → 68.04d |
| TAEXPTCU320004 | Backfilling Works for Trench | 2026-12-20 → 2026-12-23 (+3d) | 2027-01-07 → 2027-01-11 (+4d) |  | 68.36d → 68.04d |
| TAEXPTCU320005 | Install Valves with fittings | 2027-01-03 → 2027-01-06 (+3d) | 2027-01-07 → 2027-01-11 (+4d) |  | 68.36d → 68.04d |
| TAEXPTCU320006 | Install fire hydrent | 2027-01-07 → 2027-01-11 (+4d) | 2027-01-14 → 2027-01-18 (+4d) |  | 68.36d → 68.04d |
| 1 | **TSE Networks** |  | 2027-04-20 → 2027-04-27 (+7d) |  |  |
| TAEXTSCU320005 | Install Valves with fittings |  | 2027-03-25 → 2027-04-01 (+7d) |  | 91.04d → 85.92d |
| TAEXTSCU320004 | Backfilling Works for Trench | 2027-03-07 → 2027-03-14 (+7d) | 2027-03-25 → 2027-04-01 (+7d) |  | 91.04d → 85.92d |
| TAEXTSCU320006 | Valve Chamber works | 2027-03-25 → 2027-04-01 (+7d) | 2027-04-14 → 2027-04-21 (+7d) |  | 91.04d → 85.92d |
| TAEXTSCU320007 | Inspection Test | 2027-04-14 → 2027-04-21 (+7d) | 2027-04-20 → 2027-04-27 (+7d) |  | 91.04d → 85.92d |
| 3 | **Storm Networks** | 2027-04-06 → 2027-04-07 (+1d) | 2027-06-19 → 2027-06-20 (+1d) |  |  |
| TAEXSTCU320001 | Excavation works for Trench | 2027-04-06 → 2027-04-07 (+1d) | 2027-04-18 → 2027-04-19 (+1d) |  | 7.64d → 6.64d |
| TAEXSTCU320002 | Bedding Works | 2027-04-18 → 2027-04-19 (+1d) | 2027-04-21 → 2027-04-22 (+1d) |  | 25.64d → 24.64d |
| TAEXSTCU320003 | Install GRP Pipes & Fittings | 2027-04-21 → 2027-04-22 (+1d) | 2027-04-28 → 2027-04-29 (+1d) |  | 25.64d → 24.64d |
| TAEXSTCU320004 | Backfilling Works for Trench | 2027-04-26 → 2027-04-27 (+1d) | 2027-05-16 → 2027-05-17 (+1d) |  | 25.64d → 24.64d |
| TAEXSTCU320005 | Manhole Installation with backfilling | 2027-05-09 → 2027-05-10 (+1d) | 2027-05-27 → 2027-05-29 (+2d) |  | 25.64d → 24.64d |

| ID | Task | Start | Finish | Complete | Total float |
| --- | --- | --- | --- | --- | --- |
| TAEXSTCU320006 | Install Catch Basin with UPVC Pipes & Fittings | 2027-05-27 → 2027-05-29 (+2d) | 2027-06-14 → 2027-06-15 (+1d) |  | 25.64d → 24.64d |
| TAEXSTCU320007 | Leakage Test | 2027-06-14 → 2027-06-15 (+1d) | 2027-06-19 → 2027-06-20 (+1d) |  | 47.64d → 46.64d |
| 16 | **Upgrade Local 33** |  | 2027-09-27 → 2027-09-25 (-2d) |  |  |
| 27 | **Road Works** | 2027-05-09 → 2027-05-16 (+7d) | 2027-06-05 → 2027-06-12 (+7d) |  |  |
| TAEXRDCU330002 | Precast Concret Kerps | 2027-05-09 → 2027-05-16 (+7d) | 2027-05-20 → 2027-05-27 (+7d) |  | 50.21d → 44.21d |
| TAEXRDCU330001 | BWC Asphalt Wearing Course with RC | 2027-05-20 → 2027-05-27 (+7d) | 2027-05-22 → 2027-05-29 (+7d) |  | 50.21d → 44.21d |
| TAEXRDCU330003 | Precast Interlock Works | 2027-05-22 → 2027-05-29 (+7d) | 2027-05-31 → 2027-06-07 (+7d) |  | 50.21d → 44.21d |
| TAEXRDCU330004 | Stone Paving works | 2027-05-31 → 2027-06-07 (+7d) | 2027-06-02 → 2027-06-09 (+7d) |  | 50.21d → 44.21d |
| TAEXRDCU330005 | Road Marking | 2027-06-02 → 2027-06-09 (+7d) | 2027-06-03 → 2027-06-10 (+7d) |  | 50.21d → 44.21d |
| TAEXRDCU330006 | Traffic Sinage | 2027-06-03 → 2027-06-10 (+7d) | 2027-06-05 → 2027-06-12 (+7d) |  | 50.21d → 44.21d |
| 18 | **Electrical Works** | 2027-04-06 → 2027-04-07 (+1d) | 2027-09-27 → 2027-09-25 (-2d) |  |  |
| TAEXELCU330001 | Trench Cut off | 2027-04-06 → 2027-04-07 (+1d) | 2027-04-19 → 2027-04-20 (+1d) |  | -24.67d → -24.71d |
| TAEXELCU330002 | Drawpit and PVC Pipes Installation | 2027-04-19 → 2027-04-20 (+1d) | 2027-04-29 → 2027-05-01 (+2d) |  | 72.64d → 71.64d |
| TAEXELCU330003 | Road Crossing Ducts | 2027-04-29 → 2027-05-01 (+2d) | 2027-05-11 → 2027-05-12 (+1d) |  | 77.64d → 76.64d |
| TAEXELCU330006 | Poles RC Foundation | 2027-04-29 → 2027-05-01 (+2d) | 2027-05-04 → 2027-05-05 (+1d) |  | 72.64d → 71.64d |
| TAEXELCU330008 | Lighting Pole Installation with Luminares | 2027-05-04 → 2027-05-05 (+1d) | 2027-05-09 → 2027-05-10 (+1d) |  | 72.64d → 71.64d |
| TAEXELCU330004 | Trench Backfilling | 2027-05-11 → 2027-05-12 (+1d) | 2027-05-26 → 2027-05-27 (+1d) |  | 77.64d → 76.64d |
| TAEXELCU330005 | Cables Pulling | 2027-05-26 → 2027-05-27 (+1d) | 2027-05-30 → 2027-05-31 (+1d) |  | 77.64d → 76.64d |
| TAEXELCU330007 | Earthing cables | 2027-09-25 → 2027-09-22 (-3d) | 2027-09-27 → 2027-09-25 (-2d) |  | -24.62d → -22.22d |
| 1 | **Telecommunication Works** | 2027-04-05 → 2027-04-12 (+7d) | 2027-08-10 → 2027-08-17 (+7d) |  |  |
| TAEXTCCU330001 | Trench Cut off | 2027-04-05 → 2027-04-12 (+7d) | 2027-04-11 → 2027-04-18 (+7d) |  | -5.61d → -11.61d |
| TAEXTCCU330002 | Drawpit and PVC Pipes Installation | 2027-07-22 → 2027-07-29 (+7d) | 2027-07-27 → 2027-08-03 (+7d) |  | -8.27d → -14.27d |
| TAEXTCCU330003 | Road Crossing Ducts | 2027-07-27 → 2027-08-03 (+7d) | 2027-07-31 → 2027-08-07 (+7d) |  | -8.27d → -14.27d |
| TAEXTCCU330004 | Trench Backfilling | 2027-07-31 → 2027-08-07 (+7d) | 2027-08-10 → 2027-08-17 (+7d) |  | -8.27d → -14.27d |
| 17 | **CCTV Works** | 2027-03-18 → 2027-03-25 (+7d) | 2027-07-28 → 2027-08-04 (+7d) |  |  |
| TAEXCCCU330001 | Pipe Installation with manhole | 2027-03-18 → 2027-03-25 (+7d) | 2027-03-28 → 2027-04-04 (+7d) |  | -2.55d → -8.55d |
| TAEXCCCU330002 | CCTV Swiches Lighting panels Installation | 2027-06-24 → 2027-07-01 (+7d) | 2027-07-06 → 2027-07-13 (+7d) |  | 12.45d → 6.45d |
| TAEXCCCU330003 | Cable laying and connected with Panels | 2027-07-06 → 2027-07-13 (+7d) | 2027-07-17 → 2027-07-24 (+7d) |  | 12.45d → 6.45d |
| TAEXCCCU330004 | Pole Installation with IP Outdoor CCTV POE Camera | 2027-07-17 → 2027-07-24 (+7d) | 2027-07-28 → 2027-08-04 (+7d) |  | 12.45d → 6.45d |
| 2 | **Potable Networks** | 2026-12-08 → 2026-12-12 (+4d) | 2027-02-17 → 2027-02-21 (+4d) |  |  |
| TAEXPTCU330001 | Excavation works for Trench | 2026-12-08 → 2026-12-12 (+4d) | 2026-12-13 → 2026-12-16 (+3d) |  | 77.36d → 77.04d |
| TAEXPTCU330002 | Bedding Works | 2026-12-13 → 2026-12-16 (+3d) | 2026-12-15 → 2026-12-19 (+4d) |  | 77.36d → 77.04d |
| TAEXPTCU330003 | Install Pipes & Fittings | 2026-12-20 → 2026-12-23 (+3d) | 2026-12-26 → 2026-12-29 (+3d) |  | 73.36d → 73.04d |
| TAEXPTCU330004 | Backfilling Works for Trench | 2026-12-26 → 2026-12-29 (+3d) | 2027-01-09 → 2027-01-12 (+3d) |  | 73.36d → 73.04d |
| TAEXPTCU330005 | Install Valves with fittings | 2027-01-04 → 2027-01-07 (+3d) | 2027-01-09 → 2027-01-12 (+3d) |  | 73.36d → 73.04d |
| TAEXPTCU330006 | Install fire hydrent | 2027-01-14 → 2027-01-18 (+4d) | 2027-01-20 → 2027-01-24 (+4d) |  | 68.36d → 68.04d |
| TAEXPTCU330007 | Valve Chamber works | 2027-01-20 → 2027-01-24 (+4d) | 2027-02-14 → 2027-02-17 (+3d) |  | 68.36d → 68.04d |
| TAEXPTCU330008 | Inspection Test | 2027-02-14 → 2027-02-17 (+3d) | 2027-02-17 → 2027-02-21 (+4d) |  | 144.46d → 141.14d |
| 3 | **TSE Networks** | 2027-02-23 → 2027-03-02 (+7d) | 2027-05-06 → 2027-05-13 (+7d) |  |  |
| TAEXTSCU330001 | Excavation works for Trench | 2027-02-23 → 2027-03-02 (+7d) | 2027-03-24 → 2027-03-31 (+7d) |  | 62.54d → 57.42d |
| TAEXTSCU330002 | Bedding Works | 2027-03-24 → 2027-03-31 (+7d) | 2027-03-27 → 2027-04-03 (+7d) |  | 62.54d → 57.42d |
| TAEXTSCU330003 | Install Pipes & Fittings | 2027-03-27 → 2027-04-03 (+7d) | 2027-04-01 → 2027-04-08 (+7d) |  | 62.54d → 57.42d |
| TAEXTSCU330004 | Backfilling Works for Trench | 2027-04-01 → 2027-04-08 (+7d) | 2027-04-15 → 2027-04-22 (+7d) |  | 77.04d → 71.92d |
| TAEXTSCU330005 | Install Valves with fittings | 2027-04-11 → 2027-04-18 (+7d) | 2027-04-15 → 2027-04-22 (+7d) |  | 77.04d → 71.92d |
| TAEXTSCU330006 | Valve Chamber works | 2027-04-15 → 2027-04-22 (+7d) | 2027-05-03 → 2027-05-10 (+7d) |  | 77.04d → 71.92d |
| TAEXTSCU330007 | Inspection Test | 2027-05-03 → 2027-05-10 (+7d) | 2027-05-06 → 2027-05-13 (+7d) |  | 77.04d → 71.92d |
| TAEXSWCU330001 | Excavation works for Trench |  | 2027-02-07 → 2027-02-09 (+2d) | 67% → 97% | 131.03d → 131.47d |
| TAEXSWCU330002 | Bedding Works |  | 2027-02-08 → 2027-02-09 (+1d) | 65% → 97% | 131.03d → 131.47d |
| TAEXSWCU330003 | Install GRP Pipes & Fittings |  |  | 65% → 85% | 131.03d → 131.47d |
| 5 | **Storm Networks** | 2027-04-29 → 2027-05-01 (+2d) | 2027-07-12 → 2027-07-13 (+1d) |  |  |
| TAEXSTCU330001 | Excavation works for Trench | 2027-04-29 → 2027-05-01 (+2d) | 2027-05-18 → 2027-05-19 (+1d) |  | 7.64d → 6.64d |
| TAEXSTCU330002 | Bedding Works | 2027-05-18 → 2027-05-19 (+1d) | 2027-05-20 → 2027-05-22 (+2d) |  | 14.64d → 13.64d |
| TAEXSTCU330003 | Install GRP Pipes & Fittings | 2027-05-20 → 2027-05-22 (+2d) | 2027-05-29 → 2027-05-30 (+1d) |  | 14.64d → 13.64d |
| TAEXSTCU330004 | Backfilling Works for Trench | 2027-06-01 → 2027-06-02 (+1d) | 2027-06-15 → 2027-06-16 (+1d) |  | 14.64d → 13.64d |
| TAEXSTCU330005 | Manhole Installation with backfilling | 2027-06-14 → 2027-06-15 (+1d) | 2027-06-27 → 2027-06-28 (+1d) |  | 14.64d → 13.64d |
| TAEXSTCU330006 | Install Catch Basin with UPVC Pipes & Fittings | 2027-06-27 → 2027-06-28 (+1d) | 2027-07-08 → 2027-07-10 (+2d) |  | 14.64d → 13.64d |
| TAEXSTCU330007 | Leakage Test | 2027-07-08 → 2027-07-10 (+2d) | 2027-07-12 → 2027-07-13 (+1d) |  | 27.64d → 26.64d |
| 17 | **Pond** |  | 2026-12-16 → 2026-12-22 (+6d) |  |  |
| 21 | **Storm Water Pond** |  | 2026-12-16 → 2026-12-22 (+6d) |  |  |
| TAEXSTCSWP0007 | Excavation works for ponds 7th part |  | 2026-10-20 → 2026-10-27 (+7d) |  | 225.75d → 219.75d |
| TAEXSTCSWP0009 | Riprap Works part 1 |  | 2026-10-22 → 2026-10-28 (+6d) |  | 224.6d → 219.75d |
| TAEXSTCSWP0012 | Outfall structure works |  | 2026-12-16 → 2026-12-22 (+6d) |  | 224.6d → 219.75d |
| TAEXSTCSWP0010 | Riprap Works Part 2 |  | 2026-10-26 → 2026-11-01 (+6d) |  | 224.6d → 219.75d |
| TAEXSTCSWP0011 | Sand Marl Mix Ballast layer | 2026-10-26 → 2026-11-01 (+6d) | 2026-11-09 → 2026-11-15 (+6d) |  | 224.6d → 219.75d |
| 22 | **CLOSE OUT** | 2027-02-14 → 2027-02-03 (-11d) |  |  |  |
| 3 | **Final Testing and Commmisionning** | 2027-02-14 → 2027-02-03 (-11d) | 2027-09-06 → 2027-09-11 (+5d) |  |  |
| 1 | **Final Test & commisionning Zone 1** | 2027-03-08 → 2027-03-11 (+3d) | 2027-06-26 → 2027-07-01 (+5d) |  |  |
| TACOFTFT0007 | Sewerage Networks | 2027-03-08 → 2027-03-11 (+3d) | 2027-03-15 → 2027-03-18 (+3d) |  | 138.78d → 135.46d |
| TACOFTFT0008 | Storm Water Drainage Networks | 2027-03-08 → 2027-03-11 (+3d) | 2027-03-16 → 2027-03-20 (+4d) |  | 133.37d → 130.46d |
| TACOFTFT0006 | TSE Networks | 2027-03-08 → 2027-03-13 (+5d) | 2027-03-13 → 2027-03-17 (+4d) |  | 140.78d → 136.32d |

| ID | Task | Start | Finish | Total float |
| --- | --- | --- | --- | --- |
| TACOFTFT0005 | Potable Water Networks | 2027-04-04 → 2027-04-10 (+6d) | 2027-04-08 → 2027-04-14 (+6d) | 117.44d → 112.32d |
| TACOFTFT0003 | Telecommunications Networks | 2027-05-25 → 2027-06-01 (+7d) | 2027-05-30 → 2027-06-06 (+7d) | 67.05d → 61.05d |
| TACOFTFT0004 | CCTV Networks | 2027-05-31 → 2027-06-07 (+7d) | 2027-06-08 → 2027-06-15 (+7d) | 65.45d → 59.45d |
| TACOFTFT0002 | Electrical NetWorks | 2027-06-08 → 2027-06-14 (+6d) | 2027-06-16 → 2027-06-22 (+6d) | 52.1d → 47.86d |
| TACOFTFT0001 | Road Works | 2027-06-21 → 2027-06-27 (+6d) | 2027-06-26 → 2027-07-01 (+5d) | 25.1d → 20.86d |
| 2 | **Final Test & commisionning Zone 2** | 2027-02-14 → 2027-02-03 (-11d) | 2027-08-25 → 2027-09-01 (+7d) |  |
| TACOFTFT0015 | Sewerage Networks | 2027-02-14 → 2027-02-03 (-11d) | 2027-02-21 → 2027-02-10 (-11d) | 136.51d → 145.66d |
| TACOFTFT0013 | Potable Water Networks | 2027-03-16 → 2027-03-20 (+4d) | 2027-03-21 → 2027-03-24 (+3d) | 138.13d → 135.36d |
| TACOFTFT0014 | TSE Networks | 2027-03-25 → 2027-03-29 (+4d) | 2027-03-30 → 2027-04-03 (+4d) | 132.78d → 129.46d |
| TACOFTFT0016 | Storm Water Drainage Networks | 2027-03-28 → 2027-03-29 (+1d) | 2027-04-05 → 2027-04-06 (+1d) | 111.53d → 110.01d |
| TACOFTFT0010 | Electrical NetWorks | 2027-05-25 → 2027-06-01 (+7d) | 2027-06-02 → 2027-06-09 (+7d) | 51.05d → 45.05d |
| TACOFTFT0011 | Telecommunications Networks | 2027-06-14 → 2027-06-21 (+7d) | 2027-06-22 → 2027-06-29 (+7d) | 33.73d → 27.73d |
| TACOFTFT0009 | Road Works | 2027-07-18 → 2027-07-21 (+3d) | 2027-07-26 → 2027-07-29 (+3d) | 6.08d → 3.32d |
| TACOFTFT0012 | CCTV Networks | 2027-08-17 → 2027-08-24 (+7d) | 2027-08-25 → 2027-09-01 (+7d) | -0.55d → -6.55d |
| 3 | **Final Test & commisionning Zone 3** | 2027-02-28 → 2027-03-07 (+7d) | 2027-09-06 → 2027-09-11 (+5d) |  |
| TACOFTFT0023 | Sewerage Networks | 2027-02-28 → 2027-03-07 (+7d) | 2027-03-06 → 2027-03-13 (+7d) | 130.96d → 124.96d |
| TACOFTFT0022 | TSE Networks | 2027-05-31 → 2027-06-06 (+6d) | 2027-06-03 → 2027-06-09 (+6d) | 79.67d → 74.55d |
| TACOFTFT0017 | Road Works | 2027-07-31 → 2027-07-29 (-2d) | 2027-08-03 → 2027-08-02 (-1d) | 2.35d → 3.32d |
| TACOFTFT0024 | Storm Water Drainage Networks | 2027-08-04 → 2027-08-05 (+1d) | 2027-08-12 → 2027-08-14 (+2d) | 7.64d → 6.64d |
| TACOFTFT0019 | Telecommunications Networks | 2027-08-10 → 2027-08-17 (+7d) | 2027-08-18 → 2027-08-25 (+7d) | -8.27d → -14.27d |
| TACOFTFT0020 | CCTV Networks | 2027-08-25 → 2027-09-01 (+7d) | 2027-09-04 → 2027-09-11 (+7d) | -0.55d → -6.55d |
| 2 | **AS BUILT DRAWINGS** | 2027-03-02 → 2027-03-07 (+5d) |  |  |
| 1 | **AS BUILT DRAWINGS Zone 1** | 2027-03-08 → 2027-03-13 (+5d) |  |  |
| TACOFTAD0007 | Sewerage Networks | 2027-03-08 → 2027-03-13 (+5d) | 2027-03-20 → 2027-03-24 (+4d) | 128.78d → 124.96d |
| TACOFTAD0006 | TSE Networks | 2027-05-24 → 2027-05-30 (+6d) | 2027-06-05 → 2027-06-10 (+5d) | 62.54d → 57.42d |
| TACOFTAD0008 | Storm Water Drainage Networks | 2027-07-24 → 2027-07-25 (+1d) | 2027-08-04 → 2027-08-05 (+1d) | 10.64d → 9.64d |
| TACOFTAD0001 | Road Works | 2027-08-03 → 2027-08-02 (-1d) | 2027-08-07 → 2027-08-05 (-2d) | 2.35d → 3.32d |
| TACOFTAD0004 | CCTV Networks | 2027-08-17 → 2027-08-24 (+7d) | 2027-08-22 → 2027-08-29 (+7d) | -4.27d → -10.27d |
| TACOFTAD0003 | Telecommunications Networks | 2027-08-18 → 2027-08-25 (+7d) | 2027-08-26 → 2027-09-02 (+7d) | -8.27d → -14.27d |
| 2 | **AS BUILT DRAWINGS Zone 2** | 2027-03-02 → 2027-03-07 (+5d) |  |  |
| TACOFTAD0015 | Sewerage Networks | 2027-03-02 → 2027-03-07 (+5d) | 2027-03-20 → 2027-03-24 (+4d) | 128.78d → 124.96d |
| TACOFTAD0014 | TSE Networks | 2027-05-24 → 2027-05-30 (+6d) | 2027-06-05 → 2027-06-10 (+5d) | 62.54d → 57.42d |
| TACOFTAD0016 | Storm Water Drainage Networks | 2027-07-18 → 2027-07-19 (+1d) | 2027-08-04 → 2027-08-05 (+1d) | 10.64d → 9.64d |
| TACOFTAD0009 | Road Works | 2027-08-07 → 2027-08-05 (-2d) | 2027-08-10 → 2027-08-09 (-1d) | 2.35d → 3.32d |
| TACOFTAD0012 | CCTV Networks | 2027-08-17 → 2027-08-24 (+7d) | 2027-08-22 → 2027-08-29 (+7d) | -4.27d → -10.27d |
| TACOFTAD0011 | Telecommunications Networks | 2027-08-18 → 2027-08-25 (+7d) | 2027-08-26 → 2027-09-02 (+7d) | -8.27d → -14.27d |
| 3 | **AS BUILT DRAWINGS Zone 3** | 2027-03-08 → 2027-03-13 (+5d) |  |  |
| TACOFTAD0023 | Sewerage Networks | 2027-03-08 → 2027-03-13 (+5d) | 2027-03-20 → 2027-03-24 (+4d) | 128.78d → 124.96d |
| TACOFTAD0022 | TSE Networks | 2027-05-24 → 2027-05-30 (+6d) | 2027-06-05 → 2027-06-10 (+5d) | 62.54d → 57.42d |
| TACOFTAD0024 | Storm Water Drainage Networks | 2027-07-24 → 2027-07-25 (+1d) | 2027-08-04 → 2027-08-05 (+1d) | 10.64d → 9.64d |
| TACOFTAD0017 | Road Works | 2027-08-10 → 2027-08-09 (-1d) | 2027-08-14 → 2027-08-12 (-2d) | 2.35d → 3.32d |
| TACOFTAD0020 | CCTV Networks | 2027-08-16 → 2027-08-23 (+7d) | 2027-08-22 → 2027-08-29 (+7d) | -4.27d → -10.27d |
| TACOFTAD0019 | Telecommunications Networks | 2027-08-18 → 2027-08-25 (+7d) | 2027-08-26 → 2027-09-02 (+7d) | -8.27d → -14.27d |

## Version 4 (data date 2026-10-19, saved 2026-10-20, file 19-10-2026.xer)

Last finish 2027-10-03 → 2027-10-07 (+4d). Complete tasks 575 → 587.

Changed:

| ID | Task | Start | Finish | Complete | Total float | Predecessors |
| --- | --- | --- | --- | --- | --- | --- |
| GENERAL | **MILESTONS** |  | 2027-10-03 → 2027-10-07 (+4d) |  |  |  |
| 2 | **CONTRACTUAL MILESTONES** |  | 2027-10-03 → 2027-10-07 (+4d) |  |  |  |
| TAGNCM0003 | Project finish | 2027-10-03 → 2027-10-07 (+4d) | 2027-10-03 → 2027-10-07 (+4d) |  | -25.1d → -29.3d |  |
| 1 | **NET WORK MILESTONES** |  | 2027-10-03 → 2027-10-04 (+1d) |  |  |  |
| TAGNML0008 | Start CCTV Works | 2026-10-12 → 2026-10-19 (+7d) | 2026-10-12 → 2026-10-19 (+7d) |  | -2d → -8d |  |
| TAGNML0019 | Finish Sewerage Networks | 2027-03-24 → 2027-03-27 (+3d) | 2027-03-24 → 2027-03-27 (+3d) |  | 140.96d → 138.71d |  |
| TAGNML0017 | Finish Potable Water Networks | 2027-06-03 → 2027-06-10 (+7d) | 2027-06-03 → 2027-06-10 (+7d) |  | 79.04d → 73.04d |  |
| TAGNML0018 | Finish TSE Networks | 2027-06-09 → 2027-06-16 (+7d) | 2027-06-09 → 2027-06-16 (+7d) |  | 74.55d → 68.55d |  |
| TAGNML0020 | Finish Storm Water Drainage Networks | 2027-08-05 → 2027-08-12 (+7d) | 2027-08-05 → 2027-08-12 (+7d) |  | 25.64d → 19.97d |  |
| TAGNML0032 | Finish works for Amana Road | 2027-08-19 → 2027-08-22 (+3d) | 2027-08-19 → 2027-08-22 (+3d) |  | 13.32d → 11.84d |  |
| TAGNML0015 | Finish Teleommunications Works | 2027-09-02 → 2027-09-08 (+6d) | 2027-09-02 → 2027-09-08 (+6d) |  | 1.73d → -4.27d |  |
| TAGNML0016 | Finish CCTV Works | 2027-09-11 → 2027-09-18 (+7d) | 2027-09-11 → 2027-09-18 (+7d) |  | -6.55d → -12.55d |  |
| TAGNML0013 | Finish Road Works | 2027-10-03 → 2027-10-04 (+1d) | 2027-10-03 → 2027-10-04 (+1d) |  | -25.1d → -26.1d |  |
| TAGNML0014 | Finish Electrical Works | 2027-09-29 → 2027-10-04 (+5d) | 2027-09-29 → 2027-10-04 (+5d) |  | -22.22d → -26.81d |  |
| 4 | **ZONES MILESTONES** |  | 2027-07-21 → 2027-07-24 (+3d) |  |  |  |
| TAGNZM0006 | Finish Zone 3 | 2027-05-29 → 2027-06-05 (+7d) | 2027-05-29 → 2027-06-05 (+7d) |  | 84.04d → 78.04d |  |
| TAGNZM0004 | Finish Zone 1 | 2027-06-27 → 2027-06-30 (+3d) | 2027-06-27 → 2027-06-30 (+3d) |  | 59.86d → 56.9d |  |
| TAGNZM0005 | Finish Zone 2 | 2027-07-21 → 2027-07-24 (+3d) | 2027-07-21 → 2027-07-24 (+3d) |  | 13.32d → 11.84d |  |
| 3 | **PRELIMINARY SUBMITTALS** |  | 2026-11-10 → 2026-11-17 (+7d) |  |  |  |
| TAGNPS0002 | Shop drawing complete |  | 2026-11-10 → 2026-11-17 (+7d) |  | 10.79d → 6.2d |  |
| 5 | **MOBILIZATION** |  | 2027-08-24 → 2027-08-31 (+7d) |  |  |  |
| 2 | **Site Facilites and Offices** |  | 2027-08-24 → 2027-08-31 (+7d) |  |  |  |
| TAGNMZ9 | Office Operation part 01 |  | 2027-08-24 → 2027-08-31 (+7d) |  | -0.01d → -6.01d |  |
| 17 | **PROCUREMENT** |  | 2027-10-03 → 2027-10-04 (+1d) |  |  |  |
| 17 | **Material Fabrication and Delivery** |  | 2027-10-03 → 2027-10-04 (+1d) |  |  |  |
| 1 | **Material Fabrication and Delivery for Road Works** |  | 2027-10-03 → 2027-10-04 (+1d) |  |  |  |
| TAPQDVRD00011 | ABC Delivery to Site Part 01 |  | 2026-11-22 → 2026-11-29 (+7d) |  | -25.1d → -29.3d |  |
| TAPQDVRD00021 | BBC Base Course Delivery to Site Part 01 |  | 2027-07-10 → 2027-07-12 (+2d) | 29% → 31% | 3.32d → 1.84d |  |
| TAPQDVRD00041 | Precast Concrete Curbstone Delivery to Site part 01 |  | 2027-07-21 → 2027-07-28 (+7d) |  | -25.1d → -26.1d |  |
| TAPQDVRD0003 | BWC Asphalt Wearing Course Delivery to Site | 2027-07-10 → 2027-07-12 (+2d) | 2027-08-19 → 2027-08-22 (+3d) |  | 4.32d → 2.84d |  |
| TAPQDVRD00081 | Marking for Road delivery to site Part 01 | 2027-07-10 → 2027-07-12 (+2d) | 2027-07-15 → 2027-07-18 (+3d) |  | 3.32d → 1.84d |  |
| TAPQDVRD0005 | Precast Concrete Interlocking Delivery to Site | 2027-08-18 → 2027-08-19 (+1d) | 2027-10-03 → 2027-10-04 (+1d) |  | -25.1d → -26.1d | TAPQDVRD00041 FS+24d → TAPQDVRD00041 FS+19d |
| TAPQDVRD00091 | Trafic Sinage delivery to site Part 01 | 2027-08-19 → 2027-08-22 (+3d) | 2027-08-30 → 2027-09-01 (+2d) |  | 4.32d → 2.84d |  |
| 10 | **Material Fabrication and Delivery for Electrical Works** |  | 2027-04-07 → 2027-04-14 (+7d) |  |  |  |
| TAPQDVEL0002 | cables (LV,MV )Delivery to Site) |  | 2026-12-23 → 2026-12-30 (+7d) |  | -14.27d → -20.27d |  |
| TAPQDVEL00011 | Pipes ,Fittings Delivery to Site Part 01 |  | 2026-10-14 → 2026-10-21 (+7d) |  | -14.27d → -20.27d |  |
| TAPQDVEL0003 | Poles & Luminares Delivery to Site | 2026-12-23 → 2026-12-30 (+7d) | 2027-03-03 → 2027-03-10 (+7d) |  | -14.27d → -20.27d |  |
| TAPQDVEL0005 | Pre cast Drawpits and Pole Foundation Delivery | 2027-02-20 → 2027-02-27 (+7d) | 2027-04-07 → 2027-04-14 (+7d) |  | -14.27d → -20.27d |  |
| 11 | **Material Fabrication and Delivery for Telecommunication** |  | 2026-10-20 → 2026-10-27 (+7d) |  |  |  |
| TAPQDVTC0001 | Telecommunication Material (Pipes,,ets) Delivery |  | 2026-10-20 → 2026-10-27 (+7d) |  | -11.61d → -17.61d |  |
| 12 | **Material Fabrication and Delivery for CCTV Networks** |  | 2026-11-24 → 2026-12-01 (+7d) |  |  |  |
| TAPQDVCC0001 | CCTV Material Cabls,Camera,Devices,ets) Delivery |  | 2026-11-24 → 2026-12-01 (+7d) |  | -9.55d → -15.55d |  |
| 15 | **Material Fabrication and Delivery for Sewerage Networks** |  | 2026-11-29 → 2026-12-06 (+7d) |  |  |  |
| TAPQDVSW00011 | GRP Pipes Delivery to Site Part 01 |  | 2026-10-19 → 2026-10-26 (+7d) |  | 8.84d → 7.39d |  |
| TAPQDVSW00021 | Fiberglass Manholes,ets) Delivery Part 01 | 2026-10-19 → 2026-10-26 (+7d) | 2026-11-29 → 2026-12-06 (+7d) |  | 8.84d → 7.39d |  |
| 16 | **Material Fabrication and Delivery for Storm Networks** |  | 2026-12-05 → 2026-12-12 (+7d) |  |  |  |
| TAPQDVST00051 | Box Culvert Delivery part 01 |  | 2026-11-14 → 2026-11-21 (+7d) |  | 3.95d → 2.5d |  |
| TAPQDVST0009 | Catchbasin Delivery to Site |  | 2026-10-25 → 2026-11-01 (+7d) |  | 45.09d → 43.64d |  |
| TAPQDVST00071 | RIprab,Sand,Marl gravel Delivery for Ponds part 01 |  | 2026-10-21 → 2026-10-28 (+7d) |  | 224.4d → 218.4d |  |
| TAPQDVST00061 | Manholes,ets Delivery part 01 |  | 2026-12-05 → 2026-12-12 (+7d) |  | 3.95d → 2.5d |  |
| TAPQDVST00041 | GRP Pipes with Fittings Delivery Part 4 |  | 2026-10-20 → 2026-10-27 (+7d) |  | 3.95d → 2.5d |  |
| 1 | **CONSTRUCTION WORKS** |  | 2027-09-29 → 2027-10-04 (+5d) |  |  |  |
| 9 | **ZONE 1** |  | 2027-09-29 → 2027-10-04 (+5d) |  |  |  |
| 1 | **Collector Road 02** |  | 2027-06-27 → 2027-06-30 (+3d) |  |  |  |
| 10 | **Road Works** |  | 2027-06-27 → 2027-06-30 (+3d) |  |  |  |
| TAEXRDCC020004 | ABC aggregate Base Course Works |  | 2027-05-04 → 2027-05-08 (+4d) | 16% → 35% | 3.32d → 1.84d |  |
| TAEXRDCC020005 | MBC1 layer |  | 2027-05-05 → 2027-05-09 (+4d) |  | 3.32d → 1.84d |  |
| TAEXRDCC020006 | BBC Base Course |  | 2027-05-10 → 2027-05-13 (+3d) |  | 3.32d → 1.84d |  |
| TAEXRDCC0200021 | Backfilling Works for Road Part 01 | 2027-03-31 → 2027-04-07 (+7d) | 2027-04-10 → 2027-04-17 (+7d) |  | 3.32d → 1.84d |  |
| TAEXRDCC0200031 | Subgrade Works Part 01 | 2027-04-10 → 2027-04-17 (+7d) | 2027-04-19 → 2027-04-26 (+7d) |  | 3.32d → 1.84d |  |
| TAEXRDCC020008 | Precast Concret Kerps | 2027-05-10 → 2027-05-13 (+3d) | 2027-05-23 → 2027-05-26 (+3d) |  | 16.86d → 13.9d |  |
| TAEXRDCC020007 | BWC Asphalt Wearing Course with RC | 2027-05-23 → 2027-05-26 (+3d) | 2027-05-25 → 2027-05-29 (+4d) |  | 20.86d → 17.9d |  |
| TAEXRDCC020009 | Precast Interlock Works | 2027-05-25 → 2027-05-29 (+4d) | 2027-06-15 → 2027-06-19 (+4d) |  | 20.86d → 17.9d |  |
| TAEXRDCC020010 | Stone Paving works | 2027-06-15 → 2027-06-19 (+4d) | 2027-06-23 → 2027-06-27 (+4d) |  | 20.86d → 17.9d |  |
| TAEXRDCC020011 | Road Marking | 2027-06-23 → 2027-06-27 (+4d) | 2027-06-26 → 2027-06-29 (+3d) |  | 20.86d → 17.9d |  |
| TAEXRDCC020012 | Traffic Sinage | 2027-06-26 → 2027-06-29 (+3d) | 2027-06-27 → 2027-06-30 (+3d) |  | 20.86d → 17.9d |  |
| 11 | **Electrical Works** |  | 2027-04-28 → 2027-05-05 (+7d) |  |  |  |
| TAEXELCC020003 | Road Crossing Ducts |  | 2027-03-01 → 2027-03-08 (+7d) |  | 3.32d → 1.84d |  |
| TAEXELCC020002 | Drawpit and PVC Pipes Installation |  | 2027-02-27 → 2027-03-06 (+7d) |  | 3.32d → 1.84d |  |
| TAEXELCC020001 | Trench Cut off | 2026-12-03 → 2026-12-10 (+7d) | 2026-12-27 → 2027-01-03 (+7d) |  | 50.77d → 49.29d |  |

| ID | Task | Start | Finish | Complete | Total float |
| --- | --- | --- | --- | --- | --- |
| TAEXELCC020004 | Trench Backfilling | 2027-03-01 → 2027-03-08 (+7d) | 2027-03-22 → 2027-03-29 (+7d) |  | 3.32d → 1.84d |
| TAEXELCC020005 | Cables Pulling | 2027-03-22 → 2027-03-29 (+7d) | 2027-03-31 → 2027-04-07 (+7d) |  | 3.32d → 1.84d |
| TAEXELCC020006 | Poles RC Foundation | 2027-04-07 → 2027-04-14 (+7d) | 2027-04-14 → 2027-04-21 (+7d) |  | 50.05d → 44.05d |
| TAEXELCC020007 | Earthing cables | 2027-04-14 → 2027-04-21 (+7d) | 2027-04-26 → 2027-05-03 (+7d) |  | 50.05d → 44.05d |
| TAEXELCC020008 | Lighting Pole Installation with Luminares | 2027-04-14 → 2027-04-21 (+7d) | 2027-04-28 → 2027-05-05 (+7d) |  | 57.05d → 51.05d |
| 12 | **Telecommunication Works** |  | 2027-05-05 → 2027-05-12 (+7d) |  |  |
| TAEXTCCC020002 | Drawpit and PVC Pipes Installation |  | 2027-04-12 → 2027-04-19 (+7d) |  | -14.27d → -20.27d |
| TAEXTCCC020003 | Road Crossing Ducts |  | 2027-04-14 → 2027-04-21 (+7d) |  | 81.05d → 75.05d |
| TAEXTCCC020001 | Trench Cut off | 2026-10-14 → 2026-10-21 (+7d) | 2026-11-07 → 2026-11-14 (+7d) |  | -11.61d → -17.61d |
| TAEXTCCC020004 | Trench Backfilling | 2027-04-14 → 2027-04-21 (+7d) | 2027-05-05 → 2027-05-12 (+7d) |  | 81.05d → 75.05d |
| 13 | **CCTV Works** | 2027-02-18 → 2027-02-25 (+7d) | 2027-04-29 → 2027-05-06 (+7d) |  |  |
| TAEXCCCC020001 | Pipe Installation with manhole | 2027-02-18 → 2027-02-25 (+7d) | 2027-03-02 → 2027-03-09 (+7d) |  | -9.55d → -15.55d |
| TAEXCCCC020002 | CCTV Swiches Lighting panels Installation | 2027-03-02 → 2027-03-09 (+7d) | 2027-03-23 → 2027-03-30 (+7d) |  | -9.55d → -15.55d |
| TAEXCCCC020003 | Cable laying and connected with Panels | 2027-03-23 → 2027-03-30 (+7d) | 2027-04-08 → 2027-04-15 (+7d) |  | 89.45d → 83.45d |
| TAEXCCCC020004 | Pole Installation with IP Outdoor CCTV POE Camera | 2027-04-08 → 2027-04-15 (+7d) | 2027-04-29 → 2027-05-06 (+7d) |  | 89.45d → 83.45d |
| 14 | **Potable Networks** |  | 2027-02-23 → 2026-10-17 (-129d) |  |  |
| TAEXPTCC020005 | Install Valves with fittings |  | 2027-02-16 → 2026-10-17 A (-122d) | 95% → 100% | 120.13d → none |
| TAEXPTCC020006 | Install fire hydrent |  | 2027-02-23 → 2026-10-17 A (-129d) | 95% → 100% | 114.36d → none |
| 15 | **TSE Networks** |  | 2027-01-04 → 2026-10-17 (-79d) |  |  |
| TAEXTSCC020005 | Install Valves with fittings |  | 2027-01-04 → 2026-10-17 A (-79d) | 95% → 100% | 182.01d → none |
| 16 | **Sewerage Networks** |  | 2027-02-02 → 2027-02-06 (+4d) |  |  |
| TAEXSWCC0200061 | Leakage Test Part 01 |  | 2027-02-02 → 2027-02-06 (+4d) |  | 145.66d → 143.41d |
| 17 | **Storm Networks** |  | 2027-02-02 → 2027-02-06 (+4d) |  |  |
| TAEXSTCC020006 | Install Catch Basin with UPVC Pipes & Fittings |  | 2027-02-02 → 2027-02-06 (+4d) | 85% → 95% | 26.67d → 27.4d |
| 2 | **Collector Road 03** |  | 2027-06-14 → 2027-06-17 (+3d) |  |  |
| 10 | **Road Works** |  | 2027-06-07 → 2027-06-10 (+3d) |  |  |
| TAEXRDCC030007 | BWC Asphalt Wearing Course with RC | 2027-05-23 → 2027-05-26 (+3d) | 2027-05-25 → 2027-05-29 (+4d) |  | 29.86d → 26.9d |
| TAEXRDCC030009 | Precast Interlock Works | 2027-05-25 → 2027-05-29 (+4d) | 2027-06-01 → 2027-06-05 (+4d) |  | 37.86d → 34.9d |
| TAEXRDCC030010 | Stone Paving works | 2027-06-01 → 2027-06-05 (+4d) | 2027-06-03 → 2027-06-07 (+4d) |  | 37.86d → 34.9d |
| TAEXRDCC030011 | Road Marking | 2027-06-03 → 2027-06-07 (+4d) | 2027-06-05 → 2027-06-08 (+3d) |  | 37.86d → 34.9d |
| TAEXRDCC030012 | Traffic Sinage | 2027-06-05 → 2027-06-08 (+3d) | 2027-06-07 → 2027-06-10 (+3d) |  | 37.86d → 34.9d |
| 1 | **Electrical Works** |  | 2027-06-14 → 2027-06-17 (+3d) |  |  |
| TAEXELCC0300011 | Trench Cut off Part 01 | 2026-11-22 → 2026-11-29 (+7d) | 2026-12-03 → 2026-12-10 (+7d) |  | -24.71d → -29.3d |
| TAEXELCC030005 | Cables Pulling | 2027-05-23 → 2027-05-26 (+3d) | 2027-05-27 → 2027-05-31 (+4d) |  | 16.86d → 13.9d |
| TAEXELCC0300041 | Trench Backfilling Part 01 | 2027-05-27 → 2027-05-31 (+4d) | 2027-06-01 → 2027-06-05 (+4d) |  | 16.86d → 13.9d |
| TAEXELCC030006 | Poles RC Foundation | 2027-06-01 → 2027-06-05 (+4d) | 2027-06-05 → 2027-06-08 (+3d) |  | 16.86d → 13.9d |
| TAEXELCC030007 | Earthing cables | 2027-06-05 → 2027-06-08 (+3d) | 2027-06-07 → 2027-06-10 (+3d) |  | 16.86d → 13.9d |
| TAEXELCC030008 | Lighting Pole Installation with Luminares | 2027-06-05 → 2027-06-08 (+3d) | 2027-06-14 → 2027-06-17 (+3d) |  | 47.86d → 44.9d |
| 2 | **Telecommunication Works** | 2026-11-30 → 2026-12-07 (+7d) | 2027-05-06 → 2027-05-13 (+7d) |  |  |
| TAEXTCCC030001 | Trench Cut off | 2026-11-30 → 2026-12-07 (+7d) | 2026-12-12 → 2026-12-19 (+7d) |  | -11.61d → -17.61d |
| TAEXTCCC030002 | Drawpit and PVC Pipes Installation | 2027-04-12 → 2027-04-19 (+7d) | 2027-04-20 → 2027-04-27 (+7d) |  | -14.27d → -20.27d |
| TAEXTCCC030003 | Road Crossing Ducts | 2027-04-20 → 2027-04-27 (+7d) | 2027-04-22 → 2027-04-29 (+7d) |  | 80.05d → 74.05d |
| TAEXTCCC030004 | Trench Backfilling | 2027-04-22 → 2027-04-29 (+7d) | 2027-05-06 → 2027-05-13 (+7d) |  | 80.05d → 74.05d |
| 3 | **CCTV Works** | 2026-10-20 → 2026-10-27 (+7d) | 2027-04-27 → 2027-05-04 (+7d) |  |  |
| TAEXCCCC030001 | Pipe Installation with manhole | 2026-10-20 → 2026-10-27 (+7d) | 2026-10-28 → 2026-11-04 (+7d) |  | -9.55d → -15.55d |
| TAEXCCCC030002 | CCTV Swiches Lighting panels Installation | 2027-03-23 → 2027-03-30 (+7d) | 2027-04-06 → 2027-04-13 (+7d) |  | -9.55d → -15.55d |
| TAEXCCCC030003 | Cable laying and connected with Panels | 2027-04-06 → 2027-04-13 (+7d) | 2027-04-15 → 2027-04-22 (+7d) |  | 91.45d → 85.45d |
| TAEXCCCC030004 | Pole Installation with IP Outdoor CCTV POE Camera | 2027-04-15 → 2027-04-22 (+7d) | 2027-04-27 → 2027-05-04 (+7d) |  | 91.45d → 85.45d |
| 8 | **Upgrade local 21** |  | 2027-06-22 → 2027-06-27 (+5d) |  |  |
| 22 | **Road Works** | 2027-05-23 → 2027-05-26 (+3d) | 2027-06-22 → 2027-06-26 (+4d) |  |  |
| TAEXRDCU210002 | Precast Concret Kerps | 2027-05-23 → 2027-05-26 (+3d) | 2027-06-02 → 2027-06-06 (+4d) |  | 24.86d → 21.9d |
| TAEXRDCU210001 | BWC Asphalt Wearing Course with RC | 2027-06-02 → 2027-06-06 (+4d) | 2027-06-03 → 2027-06-07 (+4d) |  | 24.86d → 21.9d |
| TAEXRDCU210003 | Precast Interlock Works | 2027-06-03 → 2027-06-07 (+4d) | 2027-06-12 → 2027-06-15 (+3d) |  | 24.86d → 21.9d |
| TAEXRDCU210004 | Stone Paving works | 2027-06-12 → 2027-06-15 (+3d) | 2027-06-17 → 2027-06-21 (+4d) |  | 24.86d → 21.9d |
| TAEXRDCU210005 | Road Marking | 2027-06-17 → 2027-06-21 (+4d) | 2027-06-19 → 2027-06-22 (+3d) |  | 24.86d → 21.9d |
| TAEXRDCU210006 | Traffic Sinage | 2027-06-19 → 2027-06-22 (+3d) | 2027-06-22 → 2027-06-26 (+4d) |  | 24.86d → 21.9d |
| 13 | **Electrical Works** | 2026-12-03 → 2026-12-10 (+7d) | 2027-06-20 → 2027-06-27 (+7d) |  |  |
| TAEXELCU210001 | Trench Cut off | 2026-12-03 → 2026-12-10 (+7d) | 2026-12-19 → 2026-12-26 (+7d) |  | -24.71d → -29.3d |
| TAEXELCU210002 | Drawpit and PVC Pipes Installation | 2027-04-21 → 2027-04-28 (+7d) | 2027-05-05 → 2027-05-12 (+7d) |  | 14.05d → 8.05d |
| TAEXELCU210003 | Road Crossing Ducts | 2027-05-05 → 2027-05-12 (+7d) | 2027-05-12 → 2027-05-19 (+7d) |  | 14.05d → 8.05d |
| TAEXELCU210006 | Poles RC Foundation | 2027-05-05 → 2027-05-12 (+7d) | 2027-05-15 → 2027-05-22 (+7d) |  | 36.05d → 30.05d |
| TAEXELCU210004 | Trench Backfilling | 2027-05-12 → 2027-05-19 (+7d) | 2027-06-02 → 2027-06-09 (+7d) |  | 14.05d → 8.05d |
| TAEXELCU210008 | Lighting Pole Installation with Luminares | 2027-05-15 → 2027-05-22 (+7d) | 2027-05-26 → 2027-06-02 (+7d) |  | 63.05d → 57.05d |
| TAEXELCU210005 | Cables Pulling | 2027-06-02 → 2027-06-09 (+7d) | 2027-06-09 → 2027-06-16 (+7d) |  | 14.05d → 8.05d |
| TAEXELCU210007 | Earthing cables | 2027-06-09 → 2027-06-16 (+7d) | 2027-06-14 → 2027-06-21 (+7d) |  | 14.05d → 8.05d |
| TAEXELCU210009 | Install Substation & RMU | 2027-06-09 → 2027-06-16 (+7d) | 2027-06-20 → 2027-06-27 (+7d) |  | 43.05d → 37.05d |
| 1 | **Telecommunication Works** | 2027-01-04 → 2027-01-11 (+7d) | 2027-06-01 → 2027-06-08 (+7d) |  |  |
| TAEXTCCU210001 | Trench Cut off | 2027-01-04 → 2027-01-11 (+7d) | 2027-01-20 → 2027-01-27 (+7d) |  | -11.61d → -17.61d |
| TAEXTCCU210002 | Drawpit and PVC Pipes Installation | 2027-04-20 → 2027-04-27 (+7d) | 2027-05-04 → 2027-05-11 (+7d) |  | -14.27d → -20.27d |
| TAEXTCCU210003 | Road Crossing Ducts | 2027-05-04 → 2027-05-11 (+7d) | 2027-05-11 → 2027-05-18 (+7d) |  | 58.05d → 52.05d |

| ID | Task | Start | Finish | Complete | Total float |
| --- | --- | --- | --- | --- | --- |
| TAEXTCCU210004 | Trench Backfilling | 2027-05-11 → 2027-05-18 (+7d) | 2027-06-01 → 2027-06-08 (+7d) |  | 58.05d → 52.05d |
| 10 | **CCTV Works** | 2026-10-28 → 2026-11-04 (+7d) | 2027-05-25 → 2027-06-01 (+7d) |  |  |
| TAEXCCCU210001 | Pipe Installation with manhole | 2026-10-28 → 2026-11-04 (+7d) | 2026-11-14 → 2026-11-21 (+7d) |  | -9.55d → -15.55d |
| TAEXCCCU210002 | CCTV Swiches Lighting panels Installation | 2027-04-06 → 2027-04-13 (+7d) | 2027-04-25 → 2027-05-02 (+7d) |  | -9.55d → -15.55d |
| TAEXCCCU210003 | Cable laying and connected with Panels | 2027-04-25 → 2027-05-02 (+7d) | 2027-05-09 → 2027-05-16 (+7d) |  | 67.45d → 61.45d |
| TAEXCCCU210004 | Pole Installation with IP Outdoor CCTV POE Camera | 2027-05-09 → 2027-05-16 (+7d) | 2027-05-25 → 2027-06-01 (+7d) |  | 67.45d → 61.45d |
| 2 | **Potable Networks** |  | 2027-04-10 → 2027-04-17 (+7d) |  |  |
| TAEXPTCU210001 | Excavation works for Trench |  | 2026-11-07 → 2026-11-14 (+7d) |  | 68.04d → 62.04d |
| TAEXPTCU210005 | Install Valves with fittings |  | 2027-03-10 → 2027-03-17 (+7d) |  | 100.32d → 94.32d |
| TAEXPTCU210007 | Valve Chamber works |  | 2027-04-04 → 2027-04-11 (+7d) |  | 100.32d → 94.32d |
| TAEXPTCU210002 | Bedding Works | 2027-01-14 → 2026-10-14 A (-92d) | 2027-01-17 → 2027-01-23 (+6d) | 0% → 25% | 114.32d → 112.12d |
| TAEXPTCU210003 | Install Pipes & Fittings | 2027-02-01 → 2026-10-17 A (-107d) | 2027-02-18 → 2027-02-21 (+3d) | 0% → 22% | 101.32d → 98.62d |
| TAEXPTCU210004 | Backfilling Works for Trench | 2027-02-20 → 2027-02-27 (+7d) | 2027-03-10 → 2027-03-17 (+7d) |  | 100.32d → 94.32d |
| TAEXPTCU210006 | Install fire hydrent | 2027-03-10 → 2027-03-17 (+7d) | 2027-03-20 → 2027-03-27 (+7d) |  | 100.32d → 94.32d |
| TAEXPTCU210008 | Inspection Test | 2027-04-04 → 2027-04-11 (+7d) | 2027-04-10 → 2027-04-17 (+7d) |  | 100.32d → 94.32d |
| 3 | **TSE Networks** |  | 2027-03-13 → 2027-03-20 (+7d) |  |  |
| TAEXTSCU210005 | Install Valves with fittings |  | 2027-02-20 → 2027-02-27 (+7d) |  | 110.72d → 104.72d |
| TAEXTSCU210006 | Valve Chamber works |  | 2027-03-07 → 2027-03-14 (+7d) |  | 110.72d → 104.72d |
| TAEXTSCU210001 | Excavation works for Trench | 2026-12-09 → 2026-12-16 (+7d) | 2027-01-12 → 2027-01-19 (+7d) |  | 57.42d → 51.42d |
| TAEXTSCU210002 | Bedding Works | 2027-01-12 → 2027-01-19 (+7d) | 2027-01-14 → 2027-01-21 (+7d) |  | 100.32d → 94.32d |
| TAEXTSCU210003 | Install Pipes & Fittings | 2027-01-14 → 2027-01-21 (+7d) | 2027-02-01 → 2027-02-08 (+7d) |  | 100.32d → 94.32d |
| TAEXTSCU210004 | Backfilling Works for Trench | 2027-02-01 → 2027-02-08 (+7d) | 2027-02-20 → 2027-02-27 (+7d) |  | 100.32d → 94.32d |
| TAEXTSCU210007 | Inspection Test | 2027-03-07 → 2027-03-14 (+7d) | 2027-03-13 → 2027-03-20 (+7d) |  | 119.32d → 113.32d |
| 4 | **Sewerage Networks** |  | 2026-12-21 → 2026-12-24 (+3d) |  |  |
| TAEXSWCU210001 | Excavation works for Trench |  | 2026-11-10 → 2026-11-11 (+1d) | 67% → 87% | 131.47d → 131.68d |
| TAEXSWCU210002 | Bedding Works |  | 2026-11-11 → 2026-11-12 (+1d) |  | 194.73d → 193.53d |
| TAEXSWCU210003 | Install GRP Pipes & Fittings |  | 2026-11-17 → 2026-11-18 (+1d) |  | 194.73d → 193.53d |
| TAEXSWCU210005 | Manhole Installation with backfilling |  | 2026-12-16 → 2026-12-20 (+4d) |  | 194.73d → 191.35d |
| TAEXSWCU210004 | Backfilling Works for Trench | 2026-11-16 → 2026-10-18 A (-29d) | 2026-12-05 → 2026-12-06 (+1d) | 0% → 25% | 194.73d → 193.53d |
| TAEXSWCU210006 | Leakage Test | 2026-12-16 → 2026-12-20 (+4d) | 2026-12-21 → 2026-12-24 (+3d) |  | 194.73d → 191.35d |
| 5 | **Storm Networks** |  | 2027-02-03 → 2027-02-06 (+3d) |  |  |
| TAEXSTCU210007 | Leakage Test |  | 2027-02-03 → 2027-02-06 (+3d) |  | 145.66d → 143.41d |
| TAEXSTCU2100051 | Manhole Installation with backfilling Part 01 |  | 2026-12-08 → 2026-12-15 (+7d) |  | 27.45d → 26d |
| TAEXSTCU2100031 | Install GRP Pipes & Fittings Part 01 |  | 2026-10-14 → 2026-10-21 (+7d) |  | 48.99d → 47.54d |
| TAEXSTCU2100041 | Backfilling Works for Trench Part 01 |  | 2026-11-01 → 2026-11-08 (+7d) |  | 48.99d → 47.54d |
| TAEXSTCU2100021 | Bedding Works Part 01 | 2026-10-12 → 2026-10-19 (+7d) | 2026-10-12 → 2026-10-19 (+7d) |  | 48.99d → 47.54d |
| TAEXSTCU210006 | Install Catch Basin with UPVC Pipes & Fittings | 2027-01-04 → 2027-01-11 (+7d) | 2027-01-20 → 2027-01-27 (+7d) |  | 3.95d → 2.5d |
| 6 | **Upgrade local 26** |  | 2027-09-29 → 2027-10-04 (+5d) |  |  |
| 14 | **Electrical Works** |  | 2027-09-29 → 2027-10-04 (+5d) |  |  |
| TAEXELCU260001 | Trench Cut off |  | 2026-12-28 → 2027-01-04 (+7d) |  | -24.71d → -29.3d |
| TAEXELCU260005 | Cables Pulling |  | 2027-04-20 → 2027-04-27 (+7d) |  | 113.55d → 107.55d |
| TAEXELCU260004 | Trench Backfilling |  | 2027-04-18 → 2027-04-25 (+7d) |  | 113.55d → 107.55d |
| TAEXELCU260006 | Poles RC Foundation | 2027-04-07 → 2027-04-14 (+7d) | 2027-04-14 → 2027-04-21 (+7d) |  | 91.05d → 85.05d |
| TAEXELCU260008 | Lighting Pole Installation with Luminares | 2027-04-14 → 2027-04-21 (+7d) | 2027-04-24 → 2027-05-01 (+7d) |  | 91.05d → 85.05d |
| TAEXELCU260007 | Earthing cables | 2027-09-25 → 2027-09-29 (+4d) | 2027-09-29 → 2027-10-04 (+5d) |  | -22.22d → -26.81d |
| 10 | **CCTV Works** | 2026-11-14 → 2026-11-21 (+7d) | 2027-05-30 → 2027-06-06 (+7d) |  |  |
| TAEXCCCU260001 | Pipe Installation with manhole | 2026-11-14 → 2026-11-21 (+7d) | 2026-11-25 → 2026-12-02 (+7d) |  | -9.55d → -15.55d |
| TAEXCCCU260002 | CCTV Swiches Lighting panels Installation | 2027-04-25 → 2027-05-02 (+7d) | 2027-05-09 → 2027-05-16 (+7d) |  | -9.55d → -15.55d |
| TAEXCCCU260003 | Cable laying and connected with Panels | 2027-05-09 → 2027-05-16 (+7d) | 2027-05-18 → 2027-05-25 (+7d) |  | 63.45d → 57.45d |
| TAEXCCCU260004 | Pole Installation with IP Outdoor CCTV POE Camera | 2027-05-18 → 2027-05-25 (+7d) | 2027-05-30 → 2027-06-06 (+7d) |  | 63.45d → 57.45d |
| 3 | **Local Road 10** |  | 2027-06-16 → 2027-06-23 (+7d) |  |  |
| 12 | **Road Works** |  | 2027-05-19 → 2027-05-20 (+1d) |  |  |
| TAEXRDCL100003 | Subgrade Works | 2026-12-07 → 2026-12-14 (+7d) | 2026-12-12 → 2026-12-19 (+7d) |  | 47.15d → 43.45d |
| TAEXRDCL100004 | ABC aggregate Base Course Works | 2027-01-31 → 2027-02-04 (+4d) | 2027-02-04 → 2027-02-09 (+5d) |  | 3.95d → 2.5d |
| TAEXRDCL100005 | MBC1 layer | 2027-02-04 → 2027-02-09 (+5d) | 2027-02-06 → 2027-02-10 (+4d) |  | 3.95d → 2.5d |
| TAEXRDCL100006 | BBC Base Course | 2027-02-06 → 2027-02-10 (+4d) | 2027-02-08 → 2027-02-13 (+5d) |  | 3.95d → 2.5d |
| TAEXRDCL100008 | Precast Concret Kerps | 2027-02-08 → 2027-02-13 (+5d) | 2027-02-24 → 2027-03-01 (+5d) |  | 3.95d → 2.5d |
| TAEXRDCL100007 | BWC Asphalt Wearing Course with RC | 2027-04-28 → 2027-04-29 (+1d) | 2027-04-29 → 2027-05-01 (+2d) |  | 53.95d → 52.5d |
| TAEXRDCL100009 | Precast Interlock Works | 2027-04-29 → 2027-05-01 (+2d) | 2027-05-15 → 2027-05-16 (+1d) |  | 53.95d → 52.5d |
| TAEXRDCL100010 | Stone Paving works | 2027-05-15 → 2027-05-16 (+1d) | 2027-05-17 → 2027-05-18 (+1d) |  | 53.95d → 52.5d |
| TAEXRDCL100011 | Road Marking | 2027-05-17 → 2027-05-18 (+1d) | 2027-05-18 → 2027-05-19 (+1d) |  | 53.95d → 52.5d |
| TAEXRDCL100012 | Traffic Sinage | 2027-05-18 → 2027-05-19 (+1d) | 2027-05-19 → 2027-05-20 (+1d) |  | 53.95d → 52.5d |
| 25 | **Electrical Works** |  | 2027-06-16 → 2027-06-23 (+7d) |  |  |
| TAEXELCL100001 | Trench Cut off | 2026-12-28 → 2027-01-04 (+7d) | 2027-01-11 → 2027-01-18 (+7d) |  | -24.71d → -29.3d |
| TAEXELCL100002 | Drawpit and PVC Pipes Installation | 2027-04-07 → 2027-04-14 (+7d) | 2027-04-19 → 2027-04-26 (+7d) |  | 48.05d → 42.05d |
| TAEXELCL100003 | Road Crossing Ducts | 2027-04-19 → 2027-04-26 (+7d) | 2027-04-21 → 2027-04-28 (+7d) |  | 48.05d → 42.05d |
| TAEXELCL100006 | Poles RC Foundation | 2027-04-19 → 2027-04-26 (+7d) | 2027-04-22 → 2027-04-29 (+7d) |  | 59.05d → 53.05d |
| TAEXELCL100004 | Trench Backfilling | 2027-04-21 → 2027-04-28 (+7d) | 2027-05-03 → 2027-05-10 (+7d) |  | 48.05d → 42.05d |
| TAEXELCL100008 | Lighting Pole Installation with Luminares | 2027-04-22 → 2027-04-29 (+7d) | 2027-04-27 → 2027-05-04 (+7d) |  | 88.05d → 82.05d |
| TAEXELCL100005 | Cables Pulling | 2027-05-03 → 2027-05-10 (+7d) | 2027-05-05 → 2027-05-12 (+7d) |  | 48.05d → 42.05d |

| ID | Task | Start | Finish | Complete | Total float |
| --- | --- | --- | --- | --- | --- |
| TAEXELCL100007 | Earthing cables | 2027-06-14 → 2027-06-21 (+7d) | 2027-06-16 → 2027-06-23 (+7d) |  | 14.05d → 8.05d |
| 14 | **Telecommunication Works** | 2027-01-27 → 2027-02-03 (+7d) | 2027-05-23 → 2027-05-30 (+7d) |  |  |
| TAEXTCCL100001 | Trench Cut off | 2027-01-27 → 2027-02-03 (+7d) | 2027-02-02 → 2027-02-09 (+7d) |  | -11.61d → -17.61d |
| TAEXTCCL100002 | Drawpit and PVC Pipes Installation | 2027-05-04 → 2027-05-11 (+7d) | 2027-05-09 → 2027-05-16 (+7d) |  | -14.27d → -20.27d |
| TAEXTCCL100003 | Road Crossing Ducts | 2027-05-09 → 2027-05-16 (+7d) | 2027-05-11 → 2027-05-18 (+7d) |  | 66.05d → 60.05d |
| TAEXTCCL100004 | Trench Backfilling | 2027-05-11 → 2027-05-18 (+7d) | 2027-05-23 → 2027-05-30 (+7d) |  | 66.05d → 60.05d |
| 10 | **CCTV Works** | 2026-11-25 → 2026-12-02 (+7d) | 2027-06-07 → 2027-06-14 (+7d) |  |  |
| TAEXCCCL100001 | Pipe Installation with manhole | 2026-11-25 → 2026-12-02 (+7d) | 2026-12-05 → 2026-12-12 (+7d) |  | -9.55d → -15.55d |
| TAEXCCCL100002 | CCTV Swiches Lighting panels Installation | 2027-05-09 → 2027-05-16 (+7d) | 2027-05-20 → 2027-05-27 (+7d) |  | -9.55d → -15.55d |
| TAEXCCCL100003 | Cable laying and connected with Panels | 2027-05-20 → 2027-05-27 (+7d) | 2027-05-27 → 2027-06-03 (+7d) |  | 56.45d → 50.45d |
| TAEXCCCL100004 | Pole Installation with IP Outdoor CCTV POE Camera | 2027-05-27 → 2027-06-03 (+7d) | 2027-06-07 → 2027-06-14 (+7d) |  | 56.45d → 50.45d |
| 1 | **Potable Networks** |  | 2027-03-07 → 2027-03-04 (-3d) |  |  |
| TAEXPTCL100007 | Valve Chamber works |  | 2027-03-02 → 2027-02-28 (-2d) | 55% → 90% | 110.01d → 112.41d |
| TAEXPTCL100005 | Install Valves with fittings |  | 2027-02-16 → 2027-02-20 (+4d) | 40% → 90% | 120.13d → 117.73d |
| TAEXPTCL100006 | Install fire hydrent |  | 2027-02-23 → 2027-02-27 (+4d) | 50% → 90% | 110.01d → 111.96d |
| TAEXPTCL100004 | Backfilling Works for Trench |  | 2026-11-10 → 2026-11-17 (+7d) |  | 203.36d → 198.16d |
| TAEXPTCL100008 | Inspection Test | 2027-03-02 → 2027-02-28 (-2d) | 2027-03-07 → 2027-03-04 (-3d) |  | 125.46d → 131.56d |
| 2 | **TSE Networks** |  | 2027-03-11 → 2026-10-18 (-144d) |  |  |
| TAEXTSCL100007 | Inspection Test | 2027-03-07 → 2026-10-17 A (-141d) | 2027-03-11 → 2026-10-18 A (-144d) | 0% → 100% | 125.46d → none |
| 4 | **Storm Networks** |  | 2027-01-31 → 2027-02-04 (+4d) |  |  |
| TAEXSTCL100006 | Install Catch Basin with UPVC Pipes & Fittings | 2027-01-20 → 2026-10-18 A (-94d) | 2027-01-31 → 2027-02-04 (+4d) | 0% → 25% | 3.95d → 2.5d |
| NEWPROJ-16-1-9-4 | **AMANAH ROAD** |  | 2027-08-19 → 2027-08-22 (+3d) |  |  |
| TAEXRDCA050007 | Backfilling Works for Road | 2027-07-21 → 2027-07-24 (+3d) | 2027-08-19 → 2027-08-22 (+3d) |  | 13.32d → 11.84d |
| 10 | **ZONE 2** |  | 2027-08-23 → 2027-08-30 (+7d) |  |  |
| 1 | **Collector Road 01** |  | 2027-07-12 → 2027-07-19 (+7d) |  |  |
| 13 | **Road Works** |  | 2027-04-24 → 2027-04-28 (+4d) |  |  |
| TAEXRDCC0100011 | Road Excavation and Disposal Part 01 | 2026-12-29 → 2027-01-05 (+7d) | 2027-01-02 → 2027-01-09 (+7d) |  | 10.16d → 6.46d |
| TAEXRDCC0100021 | Backfilling Works for Road Part 01 | 2027-01-02 → 2027-01-09 (+7d) | 2027-01-05 → 2027-01-12 (+7d) |  | 10.16d → 6.46d |
| TAEXRDCC0100031 | Subgrade Works Part 01 | 2027-01-05 → 2027-01-12 (+7d) | 2027-01-20 → 2027-01-27 (+7d) |  | 10.16d → 6.46d |
| TAEXRDCC010004 | ABC aggregate Base Course Works | 2027-01-20 → 2027-01-27 (+7d) | 2027-02-10 → 2027-02-17 (+7d) |  | 10.16d → 6.46d |
| TAEXRDCC010005 | MBC1 layer | 2027-02-10 → 2027-02-17 (+7d) | 2027-02-13 → 2027-02-20 (+7d) |  | 10.16d → 6.46d |
| TAEXRDCC010006 | BBC Base Course | 2027-02-13 → 2027-02-20 (+7d) | 2027-02-17 → 2027-02-24 (+7d) |  | 10.16d → 6.46d |
| TAEXRDCC010008 | Precast Concret Kerps | 2027-02-24 → 2027-03-01 (+5d) | 2027-03-17 → 2027-03-22 (+5d) |  | 3.95d → 2.5d |
| TAEXRDCC010007 | BWC Asphalt Wearing Course with RC | 2027-03-17 → 2027-03-22 (+5d) | 2027-03-20 → 2027-03-24 (+4d) |  | 79.46d → 75.71d |
| TAEXRDCC010009 | Precast Interlock Works | 2027-03-20 → 2027-03-24 (+4d) | 2027-04-07 → 2027-04-12 (+5d) |  | 79.46d → 75.71d |
| TAEXRDCC010010 | Stone Paving works | 2027-04-07 → 2027-04-12 (+5d) | 2027-04-18 → 2027-04-22 (+4d) |  | 79.46d → 75.71d |
| TAEXRDCC010011 | Road Marking | 2027-04-18 → 2027-04-22 (+4d) | 2027-04-20 → 2027-04-25 (+5d) |  | 79.46d → 75.71d |
| TAEXRDCC010012 | Traffic Sinage | 2027-04-20 → 2027-04-25 (+5d) | 2027-04-24 → 2027-04-28 (+4d) |  | 79.46d → 75.71d |
| 11 | **Electrical Works** |  | 2027-06-19 → 2027-06-26 (+7d) |  |  |
| TAEXELCC010003 | Road Crossing Ducts |  | 2027-04-21 → 2027-04-28 (+7d) |  | 51.31d → 45.31d |
| TAEXELCC010001 | Trench Cut off | 2027-01-11 → 2027-01-18 (+7d) | 2027-01-26 → 2027-02-02 (+7d) |  | -24.71d → -29.3d |
| TAEXELCC010002 | Drawpit and PVC Pipes Installation | 2027-04-07 → 2027-04-14 (+7d) | 2027-04-19 → 2027-04-26 (+7d) |  | 51.31d → 45.31d |
| TAEXELCC010006 | Poles RC Foundation | 2027-04-19 → 2027-04-26 (+7d) | 2027-04-22 → 2027-04-29 (+7d) |  | 61.05d → 55.05d |
| TAEXELCC010004 | Trench Backfilling | 2027-04-21 → 2027-04-28 (+7d) | 2027-05-09 → 2027-05-16 (+7d) |  | 51.31d → 45.31d |
| TAEXELCC010005 | Cables Pulling | 2027-05-09 → 2027-05-16 (+7d) | 2027-05-13 → 2027-05-20 (+7d) |  | 51.31d → 45.31d |
| TAEXELCC010008 | Lighting Pole Installation with Luminares | 2027-05-13 → 2027-05-20 (+7d) | 2027-05-25 → 2027-06-01 (+7d) |  | 51.31d → 45.31d |
| TAEXELCC010007 | Earthing cables | 2027-06-16 → 2027-06-23 (+7d) | 2027-06-19 → 2027-06-26 (+7d) |  | 14.05d → 8.05d |
| 1 | **Telecommunication Works** |  | 2027-06-09 → 2027-06-16 (+7d) |  |  |
| TAEXTCCC010003 | Road Crossing Ducts |  | 2027-05-23 → 2027-05-30 (+7d) |  | 37.45d → 31.45d |
| TAEXTCCC010001 | Trench Cut off | 2027-02-02 → 2027-02-09 (+7d) | 2027-03-01 → 2027-03-08 (+7d) |  | -11.61d → -17.61d |
| TAEXTCCC010002 | Drawpit and HDPE Pipes Installation | 2027-05-09 → 2027-05-16 (+7d) | 2027-05-20 → 2027-05-27 (+7d) |  | -14.27d → -20.27d |
| TAEXTCCC010004 | Trench Backfilling | 2027-05-23 → 2027-05-30 (+7d) | 2027-06-09 → 2027-06-16 (+7d) |  | 37.45d → 31.45d |
| 2 | **CCTV Works** | 2026-12-05 → 2026-12-12 (+7d) | 2027-07-12 → 2027-07-19 (+7d) |  |  |
| TAEXCCCC010001 | Pipe Installation with manhole | 2026-12-05 → 2026-12-12 (+7d) | 2026-12-19 → 2026-12-26 (+7d) |  | -9.55d → -15.55d |
| TAEXCCCC010002 | CCTV Swiches Lighting panels Installation | 2027-05-20 → 2027-05-27 (+7d) | 2027-06-08 → 2027-06-15 (+7d) |  | -9.55d → -15.55d |
| TAEXCCCC010003 | Cable laying and connected with Panels | 2027-06-08 → 2027-06-15 (+7d) | 2027-06-22 → 2027-06-29 (+7d) |  | 26.45d → 20.45d |
| TAEXCCCC010004 | Pole Installation with IP Outdoor CCTV POE Camera | 2027-06-22 → 2027-06-29 (+7d) | 2027-07-12 → 2027-07-19 (+7d) |  | 26.45d → 20.45d |
| 3 | **Potable Networks** |  | 2027-03-20 → 2027-03-23 (+3d) |  |  |
| TAEXPTCC010002 | Bedding Works |  | 2026-10-31 → 2026-11-07 (+7d) |  | 10.16d → 6.46d |
| TAEXPTCC010003 | Install Pipes & Fittings |  | 2026-11-11 → 2026-11-18 (+7d) |  | 10.16d → 6.46d |
| TAEXPTCC010004 | Backfilling Works for Trench |  | 2026-11-24 → 2026-12-01 (+7d) |  | 12.48d → 8.78d |
| TAEXPTCC010007 | Valve Chamber works |  | 2027-03-15 → 2027-03-18 (+3d) |  | 114.36d → 111.96d |
| TAEXPTCC010005 | Install Valves with fittings |  | 2027-02-04 → 2027-02-10 (+6d) |  | 120.13d → 117.73d |
| TAEXPTCC0100011 | Excavation works for Trench Part 01 | 2026-10-17 → 2026-10-24 (+7d) | 2026-10-28 → 2026-11-04 (+7d) |  | 10.16d → 6.46d |
| TAEXPTCC010006 | Install fire hydrent | 2027-01-30 → 2027-02-04 (+5d) | 2027-02-07 → 2027-02-13 (+6d) |  | 89.26d → 84.06d |
| TAEXPTCC010008 | Inspection Test | 2027-03-15 → 2027-03-18 (+3d) | 2027-03-20 → 2027-03-23 (+3d) |  | 114.36d → 111.96d |
| 4 | **TSE Networks** |  | 2027-03-24 → 2027-03-28 (+4d) |  |  |
| TAEXTSCC010001 | Excavation works for Trench |  | 2026-11-07 → 2026-11-14 (+7d) |  | 12.04d → 8.34d |
| TAEXTSCC010005 | Install Valves with fittings |  | 2026-12-16 → 2026-12-23 (+7d) |  | 10.16d → 6.46d |
| TAEXTSCC010006 | Valve Chamber works |  | 2026-12-29 → 2027-01-05 (+7d) |  | 10.16d → 6.46d |

| ID | Task | Start | Finish | Complete | Total float |
| --- | --- | --- | --- | --- | --- |
| TAEXTSCC010002 | Bedding Works | 2026-11-07 → 2026-11-14 (+7d) | 2026-11-09 → 2026-11-16 (+7d) |  | 12.04d → 8.34d |
| TAEXTSCC010003 | Install Pipes & Fittings | 2026-11-11 → 2026-11-18 (+7d) | 2026-11-28 → 2026-12-05 (+7d) |  | 10.16d → 6.46d |
| TAEXTSCC010004 | Backfilling Works for Trench | 2026-11-28 → 2026-12-05 (+7d) | 2026-12-16 → 2026-12-23 (+7d) |  | 10.16d → 6.46d |
| TAEXTSCC010007 | Inspection Test | 2027-03-20 → 2027-03-23 (+3d) | 2027-03-24 → 2027-03-28 (+4d) |  | 114.36d → 111.96d |
| 5 | **Sewerage Networks** |  | 2026-12-10 → 2026-12-17 (+7d) |  |  |
| TAEXSWCC0100011 | Excavation works for Trench Part 01 |  | 2026-10-20 → 2026-10-27 (+7d) |  | 131.47d → 131.68d |
| TAEXSWCC010005 | Manhole Installation with backfilling |  | 2026-12-06 → 2026-12-13 (+7d) |  | 192.5d → 186.5d |
| TAEXSWCC0100021 | Bedding Works Part 01 |  | 2026-10-21 → 2026-10-28 (+7d) |  | 197.65d → 191.65d |
| TAEXSWCC0100031 | Install GRP Pipes & Fittings Part 01 |  | 2026-10-22 → 2026-10-29 (+7d) |  | 197.65d → 191.65d |
| TAEXSWCC010006 | Leakage Test |  | 2026-12-10 → 2026-12-17 (+7d) |  | 192.5d → 186.5d |
| TAEXSWCC0100041 | Backfilling Works for Trench Part 01 | 2026-11-09 → 2026-11-16 (+7d) | 2026-11-18 → 2026-11-25 (+7d) |  | 197.65d → 191.65d |
| 6 | **Storm Networks** |  | 2026-12-31 → 2027-01-04 (+4d) |  |  |
| TAEXSTCC0100051 | Manhole Installation with backfilling Part 01 |  | 2026-12-10 → 2026-12-17 (+7d) |  | 30.45d → 28.95d |
| TAEXSTCC0100091 | Install Box Culvert Part 2 Part 01 |  | 2026-12-14 → 2026-12-20 (+6d) | 75% → 85% | 30.45d → 28.95d |
| TAEXSTCC010006 | Install Catch Basin with UPVC Pipes & Fittings | 2026-12-14 → 2026-10-17 A (-58d) | 2026-12-28 → 2026-12-31 (+3d) | 0% → 10% | 30.45d → 28.95d |
| TAEXSTCC0100041 | Backfilling Works for Trench & Box Culvert Part 01 | 2026-10-12 → 2026-10-19 (+7d) | 2026-10-20 → 2026-10-27 (+7d) |  | 73.99d → 72.49d |
| TAEXSTCC010007 | Leakage Test | 2026-12-28 → 2026-12-31 (+3d) | 2026-12-31 → 2027-01-04 (+4d) |  | 185.96d → 182.16d |
| 11 | **Upgrade Local 28** |  | 2027-07-20 → 2027-07-27 (+7d) |  |  |
| 24 | **Road Works** | 2027-03-17 → 2027-03-22 (+5d) | 2027-05-16 → 2027-05-20 (+4d) |  |  |
| TAEXRDCU280002 | Precast Concret Kerps | 2027-03-17 → 2027-03-22 (+5d) | 2027-04-04 → 2027-04-08 (+4d) |  | 3.95d → 2.5d |
| TAEXRDCU280001 | BWC Asphalt Wearing Course with RC | 2027-04-21 → 2027-04-26 (+5d) | 2027-04-22 → 2027-04-27 (+5d) |  | 60.46d → 56.71d |
| TAEXRDCU280003 | Precast Interlock Works | 2027-04-22 → 2027-04-27 (+5d) | 2027-05-08 → 2027-05-12 (+4d) |  | 60.46d → 56.71d |
| TAEXRDCU280004 | Stone Paving works | 2027-05-08 → 2027-05-12 (+4d) | 2027-05-12 → 2027-05-17 (+5d) |  | 60.46d → 56.71d |
| TAEXRDCU280005 | Road Marking | 2027-05-12 → 2027-05-17 (+5d) | 2027-05-13 → 2027-05-18 (+5d) |  | 60.46d → 56.71d |
| TAEXRDCU280006 | Traffic Sinage | 2027-05-13 → 2027-05-18 (+5d) | 2027-05-16 → 2027-05-20 (+4d) |  | 60.46d → 56.71d |
| 15 | **Electrical Works** | 2027-01-26 → 2027-02-02 (+7d) | 2027-06-23 → 2027-06-30 (+7d) |  |  |
| TAEXELCU280001 | Trench Cut off | 2027-01-26 → 2027-02-02 (+7d) | 2027-02-07 → 2027-02-14 (+7d) |  | -24.71d → -29.3d |
| TAEXELCU280002 | Drawpit and PVC Pipes Installation | 2027-04-07 → 2027-04-14 (+7d) | 2027-04-20 → 2027-04-27 (+7d) |  | 37.05d → 31.05d |
| TAEXELCU280003 | Road Crossing Ducts | 2027-04-20 → 2027-04-27 (+7d) | 2027-04-25 → 2027-05-02 (+7d) |  | 40.05d → 34.05d |
| TAEXELCU280004 | Trench Backfilling | 2027-04-25 → 2027-05-02 (+7d) | 2027-05-15 → 2027-05-22 (+7d) |  | 40.05d → 34.05d |
| TAEXELCU280005 | Cables Pulling | 2027-05-15 → 2027-05-22 (+7d) | 2027-05-19 → 2027-05-26 (+7d) |  | 40.05d → 34.05d |
| TAEXELCU280006 | Poles RC Foundation | 2027-05-16 → 2027-05-23 (+7d) | 2027-05-23 → 2027-05-30 (+7d) |  | 37.05d → 31.05d |
| TAEXELCU280008 | Lighting Pole Installation with Luminares | 2027-05-23 → 2027-05-30 (+7d) | 2027-06-01 → 2027-06-08 (+7d) |  | 45.05d → 39.05d |
| TAEXELCU280007 | Earthing cables | 2027-06-19 → 2027-06-26 (+7d) | 2027-06-23 → 2027-06-30 (+7d) |  | 14.05d → 8.05d |
| 1 | **Telecommunication Works** | 2027-03-01 → 2027-03-08 (+7d) | 2027-06-19 → 2027-06-26 (+7d) |  |  |
| TAEXTCCU280001 | Trench Cut off | 2027-03-01 → 2027-03-08 (+7d) | 2027-03-13 → 2027-03-20 (+7d) |  | -11.61d → -17.61d |
| TAEXTCCU280002 | Drawpit and PVC Pipes Installation | 2027-05-20 → 2027-05-27 (+7d) | 2027-05-30 → 2027-06-06 (+7d) |  | -14.27d → -20.27d |
| TAEXTCCU280003 | Road Crossing Ducts | 2027-05-30 → 2027-06-06 (+7d) | 2027-06-03 → 2027-06-10 (+7d) |  | 29.05d → 23.05d |
| TAEXTCCU280004 | Trench Backfilling | 2027-06-03 → 2027-06-10 (+7d) | 2027-06-19 → 2027-06-26 (+7d) |  | 29.05d → 23.05d |
| 2 | **CCTV Works** | 2026-12-19 → 2026-12-26 (+7d) | 2027-07-20 → 2027-07-27 (+7d) |  |  |
| TAEXCCCU280001 | Pipe Installation with manhole | 2026-12-19 → 2026-12-26 (+7d) | 2027-01-02 → 2027-01-09 (+7d) |  | -9.55d → -15.55d |
| TAEXCCCU280002 | CCTV Swiches Lighting panels Installation | 2027-06-08 → 2027-06-15 (+7d) | 2027-06-24 → 2027-07-01 (+7d) |  | -9.55d → -15.55d |
| TAEXCCCU280003 | Cable laying and connected with Panels | 2027-06-24 → 2027-07-01 (+7d) | 2027-07-06 → 2027-07-13 (+7d) |  | 19.45d → 13.45d |
| TAEXCCCU280004 | Pole Installation with IP Outdoor CCTV POE Camera | 2027-07-06 → 2027-07-13 (+7d) | 2027-07-20 → 2027-07-27 (+7d) |  | 19.45d → 13.45d |
| 3 | **Potable Networks** |  | 2027-03-24 → 2027-03-22 (-2d) |  |  |
| TAEXPTCU280001 | Excavation works for Trench |  | 2026-11-02 → 2026-11-09 (+7d) |  | 68.04d → 62.04d |
| TAEXPTCU280002 | Bedding Works |  | 2026-11-02 → 2026-11-09 (+7d) |  | 192.49d → 186.79d |
| TAEXPTCU280003 | Install Pipes & Fittings |  | 2026-11-03 → 2026-11-10 (+7d) |  | 192.49d → 186.79d |
| TAEXPTCU280004 | Backfilling Works for Trench | 2026-11-03 → 2026-11-10 (+7d) | 2026-11-19 → 2026-11-26 (+7d) |  | 192.49d → 186.79d |
| TAEXPTCU280005 | Install Valves with fittings | 2026-11-15 → 2026-11-22 (+7d) | 2026-11-19 → 2026-11-26 (+7d) |  | 192.49d → 186.79d |
| TAEXPTCU280006 | Install fire hydrent | 2026-11-19 → 2026-11-26 (+7d) | 2026-11-26 → 2026-12-03 (+7d) |  | 192.49d → 186.79d |
| TAEXPTCU280007 | Valve Chamber works | 2027-03-02 → 2027-02-28 (-2d) | 2027-03-20 → 2027-03-17 (-3d) |  | 110.01d → 112.41d |
| TAEXPTCU280008 | Inspection Test | 2027-03-20 → 2027-03-17 (-3d) | 2027-03-24 → 2027-03-22 (-2d) |  | 110.01d → 112.41d |
| 4 | **TSE Networks** |  | 2027-03-29 → 2027-03-27 (-2d) |  |  |
| TAEXTSCU280005 | Install Valves with fittings |  | 2027-01-06 → 2027-01-13 (+7d) |  | 163.72d → 158.02d |
| TAEXTSCU280006 | Valve Chamber works |  | 2027-01-20 → 2027-01-27 (+7d) |  | 163.72d → 158.02d |
| TAEXTSCU280001 | Excavation works for Trench | 2026-11-14 → 2026-11-21 (+7d) | 2026-12-09 → 2026-12-16 (+7d) |  | 57.42d → 51.42d |
| TAEXTSCU280002 | Bedding Works | 2026-12-09 → 2026-12-16 (+7d) | 2026-12-12 → 2026-12-19 (+7d) |  | 163.72d → 158.02d |
| TAEXTSCU280003 | Install Pipes & Fittings | 2026-12-12 → 2026-12-19 (+7d) | 2026-12-21 → 2026-12-28 (+7d) |  | 163.72d → 158.02d |
| TAEXTSCU280004 | Backfilling Works for Trench | 2026-12-21 → 2026-12-28 (+7d) | 2027-01-06 → 2027-01-13 (+7d) |  | 163.72d → 158.02d |
| TAEXTSCU280007 | Inspection Test | 2027-03-24 → 2027-03-22 (-2d) | 2027-03-29 → 2027-03-27 (-2d) |  | 110.01d → 112.41d |
| 19 | **Storm Networks** |  | 2027-03-29 → 2027-03-27 (-2d) |  |  |
| TAEXSTCU280007 | Leakage Test |  | 2027-03-29 → 2027-03-27 (-2d) | 85% → 95% | 110.01d → 112.41d |
| TAEXSTCU21001011 | Manhole Installation with backfilling Part 01 | 2026-12-05 → 2026-12-12 (+7d) | 2026-12-10 → 2026-12-17 (+7d) |  | 3.95d → 2.5d |
| TAEXSTCU280006 | Install Catch Basin with UPVC Pipes & Fittings | 2026-12-10 → 2026-12-17 (+7d) | 2026-12-24 → 2026-12-31 (+7d) |  | 3.95d → 2.5d |
| 5 | **Local Road 02** |  | 2027-08-08 → 2027-08-15 (+7d) |  |  |
| 2 | **Road Works** |  | 2027-07-21 → 2027-07-24 (+3d) |  |  |
| TAEXRDC L020008 | Precast Concret Kerps |  | 2027-04-11 → 2027-04-15 (+4d) |  | 3.95d → 2.5d |
| TAEXRDC L020007 | BWC Asphalt Wearing Course with RC | 2027-05-25 → 2027-05-29 (+4d) | 2027-05-26 → 2027-05-30 (+4d) |  | 29.86d → 26.9d |
| TAEXRDC L020009 | Precast Interlock Works | 2027-05-26 → 2027-05-30 (+4d) | 2027-06-06 → 2027-06-09 (+3d) |  | 33.86d → 30.9d |

| ID | Task | Start | Finish | Complete | Total float |
| --- | --- | --- | --- | --- | --- |
| TAEXRDC L020010 | Stone Paving works | 2027-06-06 → 2027-06-09 (+3d) | 2027-06-10 → 2027-06-14 (+4d) |  | 33.86d → 30.9d |
| TAEXRDC L020011 | Road Marking | 2027-07-15 → 2027-07-18 (+3d) | 2027-07-19 → 2027-07-21 (+2d) |  | 3.32d → 1.84d |
| TAEXRDC L020012 | Traffic Sinage | 2027-07-19 → 2027-07-21 (+2d) | 2027-07-21 → 2027-07-24 (+3d) |  | 3.32d → 1.84d |
| 1 | **Electrical Works** |  | 2027-06-26 → 2027-07-03 (+7d) |  |  |
| TAEXELCL020001 | Trench Cut off |  | 2027-02-13 → 2027-02-20 (+7d) |  | -24.71d → -29.3d |
| TAEXELCL020004 | Trench Backfilling |  | 2027-04-15 → 2027-04-22 (+7d) |  | 71.41d → 65.41d |
| TAEXELCL020005 | Cables Pulling |  | 2027-04-18 → 2027-04-25 (+7d) |  | 71.41d → 65.41d |
| TAEXELCL020006 | Poles RC Foundation | 2027-04-07 → 2027-04-14 (+7d) | 2027-04-11 → 2027-04-18 (+7d) |  | 77.05d → 71.05d |
| TAEXELCL020008 | Lighting Pole Installation with Luminares | 2027-04-11 → 2027-04-18 (+7d) | 2027-04-15 → 2027-04-22 (+7d) |  | 85.05d → 79.05d |
| TAEXELCL020007 | Earthing cables | 2027-06-23 → 2027-06-30 (+7d) | 2027-06-26 → 2027-07-03 (+7d) |  | 14.05d → 8.05d |
| 5 | **Telecommunication Works** |  | 2027-06-09 → 2027-06-16 (+7d) |  |  |
| TAEXTCCL020001 | Trench Cut off |  | 2027-03-20 → 2027-03-27 (+7d) |  | -11.61d → -17.61d |
| TAEXTCCL020004 | Trench Backfilling | 2027-05-30 → 2027-06-06 (+7d) | 2027-06-09 → 2027-06-16 (+7d) |  | 37.05d → 31.05d |
| 3 | **CCTV Works** | 2027-01-02 → 2027-01-09 (+7d) | 2027-08-08 → 2027-08-15 (+7d) |  |  |
| TAEXCCCL020001 | Pipe Installation with manhole | 2027-01-02 → 2027-01-09 (+7d) | 2027-01-13 → 2027-01-20 (+7d) |  | -9.55d → -15.55d |
| TAEXCCCL020002 | CCTV Swiches Lighting panels Installation | 2027-06-24 → 2027-07-01 (+7d) | 2027-07-10 → 2027-07-17 (+7d) |  | -9.55d → -15.55d |
| TAEXCCCL020003 | Cable laying and connected with Panels | 2027-07-10 → 2027-07-17 (+7d) | 2027-07-21 → 2027-07-28 (+7d) |  | 3.45d → -2.55d |
| TAEXCCCL020004 | Pole Installation with IP Outdoor CCTV POE Camera | 2027-07-21 → 2027-07-28 (+7d) | 2027-08-08 → 2027-08-15 (+7d) |  | 3.45d → -2.55d |
| 20 | **Storm Networks** |  | 2027-02-03 → 2027-02-06 (+3d) |  |  |
| TAEXSTCL020007 | Leakage Test |  | 2027-02-03 → 2027-02-06 (+3d) |  | 156.51d → 154.26d |
| 7 | **Local Road 03** |  | 2027-08-22 → 2027-08-29 (+7d) |  |  |
| 2 | **Road Works** |  | 2027-05-06 → 2027-05-09 (+3d) |  |  |
| TAEXRDCL0300021 | Backfilling Works for Road Part 01 |  | 2026-12-07 → 2026-12-14 (+7d) |  | 47.15d → 43.45d |
| TAEXRDCL030008 | Precast Concret Kerps |  | 2027-04-19 → 2027-04-21 (+2d) | 30% → 40% | 3.95d → 2.5d |
| TAEXRDCL030007 | BWC Asphalt Wearing Course with RC | 2027-04-19 → 2027-04-21 (+2d) | 2027-04-20 → 2027-04-22 (+2d) |  | 68.95d → 66.1d |
| TAEXRDCL030009 | Precast Interlock Works | 2027-04-20 → 2027-04-22 (+2d) | 2027-04-29 → 2027-05-02 (+3d) |  | 68.95d → 66.1d |
| TAEXRDCL030010 | Stone Paving works | 2027-04-29 → 2027-05-02 (+3d) | 2027-05-03 → 2027-05-05 (+2d) |  | 68.95d → 66.1d |
| TAEXRDCL030011 | Road Marking | 2027-05-03 → 2027-05-05 (+2d) | 2027-05-04 → 2027-05-06 (+2d) |  | 68.95d → 66.1d |
| TAEXRDCL030012 | Traffic Sinage | 2027-05-04 → 2027-05-06 (+2d) | 2027-05-06 → 2027-05-09 (+3d) |  | 68.95d → 66.1d |
| 1 | **Electrical Works** |  | 2027-06-28 → 2027-07-05 (+7d) |  |  |
| TAEXELCL030002 | Drawpit and PVC Pipes Installation |  | 2027-04-10 → 2027-04-17 (+7d) |  | 72.4d → 66.4d |
| TAEXELCL030003 | Road Crossing Ducts |  | 2027-04-11 → 2027-04-18 (+7d) |  | 72.4d → 66.4d |
| TAEXELCL030001 | Trench Cut off |  | 2027-02-20 → 2027-02-27 (+7d) |  | -24.71d → -29.3d |
| TAEXELCL030005 | Cables Pulling |  | 2027-04-19 → 2027-04-26 (+7d) |  | 72.4d → 66.4d |
| TAEXELCL030004 | Trench Backfilling |  | 2027-04-17 → 2027-04-24 (+7d) |  | 72.4d → 66.4d |
| TAEXELCL030006 | Poles RC Foundation | 2027-04-10 → 2027-04-17 (+7d) | 2027-04-13 → 2027-04-20 (+7d) |  | 77.05d → 71.05d |
| TAEXELCL030008 | Lighting Pole Installation with Luminares | 2027-04-13 → 2027-04-20 (+7d) | 2027-04-19 → 2027-04-26 (+7d) |  | 82.05d → 76.05d |
| TAEXELCL030007 | Earthing cables | 2027-06-26 → 2027-07-03 (+7d) | 2027-06-28 → 2027-07-05 (+7d) |  | 14.05d → 8.05d |
| 3 | **Telecommunication Works** |  | 2027-06-13 → 2027-06-20 (+7d) |  |  |
| TAEXTCCL030002 | Drawpit and PVC Pipes Installation |  | 2027-06-01 → 2027-06-08 (+7d) |  | -14.27d → -20.27d |
| TAEXTCCL030003 | Road Crossing Ducts |  | 2027-06-01 → 2027-06-08 (+7d) |  | 34.07d → 28.07d |
| TAEXTCCL030001 | Trench Cut off | 2027-03-20 → 2027-03-27 (+7d) | 2027-03-28 → 2027-04-04 (+7d) |  | -11.61d → -17.61d |
| TAEXTCCL030004 | Trench Backfilling | 2027-06-01 → 2027-06-08 (+7d) | 2027-06-13 → 2027-06-20 (+7d) |  | 34.07d → 28.07d |
| 4 | **CCTV Works** | 2027-01-13 → 2027-01-20 (+7d) | 2027-08-22 → 2027-08-29 (+7d) |  |  |
| TAEXCCCL030001 | Pipe Installation with manhole | 2027-01-13 → 2027-01-20 (+7d) | 2027-01-26 → 2027-02-02 (+7d) |  | -9.55d → -15.55d |
| TAEXCCCL030002 | CCTV Swiches Lighting panels Installation | 2027-07-10 → 2027-07-17 (+7d) | 2027-07-25 → 2027-08-01 (+7d) |  | -9.55d → -15.55d |
| TAEXCCCL030003 | Cable laying and connected with Panels | 2027-07-25 → 2027-08-01 (+7d) | 2027-08-05 → 2027-08-12 (+7d) |  | -8.55d → -14.55d |
| TAEXCCCL030004 | Pole Installation with IP Outdoor CCTV POE Camera | 2027-08-05 → 2027-08-12 (+7d) | 2027-08-22 → 2027-08-29 (+7d) |  | -8.55d → -14.55d |
| 9 | **Local Road 04** |  | 2027-08-18 → 2027-08-25 (+7d) |  |  |
| 2 | **Road Works** |  | 2027-06-10 → 2027-06-12 (+2d) |  |  |
| TAEXRDCL040008 | Precast Concret Kerps |  | 2027-04-22 → 2027-04-24 (+2d) | 80% → 90% | 3.95d → 2.5d |
| TAEXRDCL040007 | BWC Asphalt Wearing Course with RC | 2027-04-22 → 2027-04-24 (+2d) | 2027-05-16 → 2027-05-17 (+1d) |  | 38.75d → 37.5d |
| TAEXRDCL040009 | Precast Interlock Works | 2027-05-16 → 2027-05-17 (+1d) | 2027-05-30 → 2027-05-31 (+1d) |  | 38.75d → 37.5d |
| TAEXRDCL040010 | Stone Paving works | 2027-05-30 → 2027-05-31 (+1d) | 2027-06-07 → 2027-06-08 (+1d) |  | 38.75d → 37.5d |
| TAEXRDCL040011 | Road Marking | 2027-06-07 → 2027-06-08 (+1d) | 2027-06-08 → 2027-06-09 (+1d) |  | 38.75d → 37.5d |
| TAEXRDCL040012 | Traffic Sinage | 2027-06-08 → 2027-06-09 (+1d) | 2027-06-10 → 2027-06-12 (+2d) |  | 38.75d → 37.5d |
| 1 | **Electrical Works** |  | 2027-06-30 → 2027-07-07 (+7d) |  |  |
| TAEXELCL040001 | Trench Cut off |  | 2027-03-06 → 2027-03-13 (+7d) |  | -24.71d → -29.3d |
| TAEXELCL040002 | Drawpit and PVC Pipes Installation |  | 2027-04-11 → 2027-04-18 (+7d) |  | 67.75d → 61.75d |
| TAEXELCL040003 | Road Crossing Ducts |  | 2027-04-12 → 2027-04-19 (+7d) |  | 67.75d → 61.75d |
| TAEXELCL040006 | Poles RC Foundation | 2027-04-11 → 2027-04-18 (+7d) | 2027-04-14 → 2027-04-21 (+7d) |  | 78.41d → 72.41d |
| TAEXELCL040004 | Trench Backfilling | 2027-04-12 → 2027-04-19 (+7d) | 2027-04-24 → 2027-05-01 (+7d) |  | 67.75d → 61.75d |
| TAEXELCL040008 | Lighting Pole Installation with Luminares | 2027-04-14 → 2027-04-21 (+7d) | 2027-04-20 → 2027-04-27 (+7d) |  | 81.41d → 75.41d |
| TAEXELCL040005 | Cables Pulling | 2027-04-24 → 2027-05-01 (+7d) | 2027-04-27 → 2027-05-04 (+7d) |  | 67.75d → 61.75d |
| TAEXELCL040009 | Install Substation & RMU | 2027-04-27 → 2027-05-04 (+7d) | 2027-05-08 → 2027-05-15 (+7d) |  | 80.75d → 74.75d |
| TAEXELCL040007 | Earthing cables | 2027-06-28 → 2027-07-05 (+7d) | 2027-06-30 → 2027-07-07 (+7d) |  | 14.05d → 8.05d |
| 3 | **Telecommunication Works** |  | 2027-06-13 → 2027-06-20 (+7d) |  |  |
| TAEXTCCL040001 | Trench Cut off |  | 2027-04-04 → 2027-04-11 (+7d) |  | -11.61d → -17.61d |
| TAEXTCCL040004 | Trench Backfilling | 2027-06-01 → 2027-06-08 (+7d) | 2027-06-13 → 2027-06-20 (+7d) |  | 34.73d → 28.73d |
| 4 | **CCTV Works** | 2027-01-26 → 2027-02-02 (+7d) | 2027-08-18 → 2027-08-25 (+7d) |  |  |

| ID | Task | Start | Finish | Complete | Total float |
| --- | --- | --- | --- | --- | --- |
| TAEXCCCL040001 | Pipe Installation with manhole | 2027-01-26 → 2027-02-02 (+7d) | 2027-02-07 → 2027-02-14 (+7d) |  | -9.55d → -15.55d |
| TAEXCCCL040002 | CCTV Swiches Lighting panels Installation | 2027-07-10 → 2027-07-17 (+7d) | 2027-07-21 → 2027-07-28 (+7d) |  | -9.55d → -15.55d |
| TAEXCCCL040003 | Cable laying and connected with Panels | 2027-07-21 → 2027-07-28 (+7d) | 2027-08-02 → 2027-08-09 (+7d) |  | -5.55d → -11.55d |
| TAEXCCCL040004 | Pole Installation with IP Outdoor CCTV POE Camera | 2027-08-02 → 2027-08-09 (+7d) | 2027-08-18 → 2027-08-25 (+7d) |  | -5.55d → -11.55d |
| 2 | **Local Road 05** |  | 2027-08-23 → 2027-08-30 (+7d) |  |  |
| 3 | **Road Works** |  | 2027-06-21 → 2027-06-24 (+3d) |  |  |
| TAEXRDCL050008 | Precast Concret Kerps |  | 2026-12-07 → 2026-12-13 (+6d) | 90% → 95% | 148.76d → 143.61d |
| TAEXRDCL050007 | BWC Asphalt Wearing Course with RC | 2027-05-26 → 2027-05-30 (+4d) | 2027-05-27 → 2027-05-31 (+4d) |  | 29.86d → 26.9d |
| TAEXRDCL050009 | Precast Interlock Works | 2027-05-27 → 2027-05-31 (+4d) | 2027-06-14 → 2027-06-17 (+3d) |  | 29.86d → 26.9d |
| TAEXRDCL050010 | Stone Paving works | 2027-06-14 → 2027-06-17 (+3d) | 2027-06-17 → 2027-06-21 (+4d) |  | 29.86d → 26.9d |
| TAEXRDCL050011 | Road Marking | 2027-06-17 → 2027-06-21 (+4d) | 2027-06-19 → 2027-06-22 (+3d) |  | 29.86d → 26.9d |
| TAEXRDCL050012 | Traffic Sinage | 2027-06-19 → 2027-06-22 (+3d) | 2027-06-21 → 2027-06-24 (+3d) |  | 29.86d → 26.9d |
| 1 | **Electrical Works** |  | 2027-07-03 → 2027-07-10 (+7d) |  |  |
| TAEXELCL050001 | Trench Cut off |  | 2027-03-18 → 2027-03-25 (+7d) |  | -24.71d → -29.3d |
| TAEXELCL050004 | Trench Backfilling | 2027-04-07 → 2027-04-14 (+7d) | 2027-04-19 → 2027-04-26 (+7d) |  | 73.05d → 67.05d |
| TAEXELCL050006 | Poles RC Foundation | 2027-04-07 → 2027-04-14 (+7d) | 2027-04-11 → 2027-04-18 (+7d) |  | 54.05d → 48.05d |
| TAEXELCL050008 | Lighting Pole Installation with Luminares | 2027-04-11 → 2027-04-18 (+7d) | 2027-04-17 → 2027-04-24 (+7d) |  | 54.05d → 48.05d |
| TAEXELCL050005 | Cables Pulling | 2027-04-19 → 2027-04-26 (+7d) | 2027-04-22 → 2027-04-29 (+7d) |  | 73.05d → 67.05d |
| TAEXELCL050007 | Earthing cables | 2027-06-30 → 2027-07-07 (+7d) | 2027-07-03 → 2027-07-10 (+7d) |  | 14.05d → 8.05d |
| 2 | **Telecommunication Works** |  | 2027-06-13 → 2027-06-20 (+7d) |  |  |
| TAEXTCCL050001 | Trench Cut off |  | 2027-04-12 → 2027-04-19 (+7d) |  | -11.61d → -17.61d |
| TAEXTCCL050004 | Trench Backfilling | 2027-06-01 → 2027-06-08 (+7d) | 2027-06-13 → 2027-06-20 (+7d) |  | 27.73d → 21.73d |
| 4 | **CCTV Works** | 2027-02-07 → 2027-02-14 (+7d) | 2027-08-23 → 2027-08-30 (+7d) |  |  |
| TAEXCCCL050001 | Pipe Installation with manhole | 2027-02-07 → 2027-02-14 (+7d) | 2027-02-18 → 2027-02-25 (+7d) |  | -9.55d → -15.55d |
| TAEXCCCL050002 | CCTV Swiches Lighting panels Installation | 2027-07-21 → 2027-07-28 (+7d) | 2027-08-02 → 2027-08-09 (+7d) |  | -9.55d → -15.55d |
| TAEXCCCL050003 | Cable laying and connected with Panels | 2027-08-02 → 2027-08-09 (+7d) | 2027-08-14 → 2027-08-21 (+7d) |  | -9.55d → -15.55d |
| TAEXCCCL050004 | Pole Installation with IP Outdoor CCTV POE Camera | 2027-08-14 → 2027-08-21 (+7d) | 2027-08-23 → 2027-08-30 (+7d) |  | -9.55d → -15.55d |
| 11 | **ZONE 3** |  | 2027-09-25 → 2027-09-29 (+4d) |  |  |
| 1 | **Local Road 01** |  | 2027-08-01 → 2027-08-05 (+4d) |  |  |
| 12 | **Road Works** |  | 2027-06-14 → 2027-06-15 (+1d) |  |  |
| TAEXRDCL010004 | ABC aggregate Base Course Works |  | 2027-02-11 → 2027-02-18 (+7d) |  | 59.39d → 54.79d |
| TAEXRDCL010005 | MBC1 layer |  | 2027-02-13 → 2027-02-20 (+7d) |  | 59.39d → 54.79d |
| TAEXRDCL010006 | BBC Base Course |  | 2027-02-13 → 2027-02-20 (+7d) |  | 59.39d → 54.79d |
| TAEXRDCL010008 | Precast Concret Kerps |  | 2027-04-27 → 2027-04-28 (+1d) | 50% → 60% | 3.95d → 2.5d |
| TAEXRDCL010007 | BWC Asphalt Wearing Course with RC | 2027-04-27 → 2027-04-28 (+1d) | 2027-04-28 → 2027-04-29 (+1d) |  | 42.95d → 41.5d |
| TAEXRDCL010009 | Precast Interlock Works | 2027-05-19 → 2027-05-20 (+1d) | 2027-06-06 → 2027-06-07 (+1d) |  | 42.95d → 41.5d |
| TAEXRDCL010010 | Stone Paving works | 2027-06-06 → 2027-06-07 (+1d) | 2027-06-10 → 2027-06-12 (+2d) |  | 42.95d → 41.5d |
| TAEXRDCL010011 | Road Marking | 2027-06-10 → 2027-06-12 (+2d) | 2027-06-12 → 2027-06-13 (+1d) |  | 42.95d → 41.5d |
| TAEXRDCL010012 | Traffic Sinage | 2027-06-12 → 2027-06-13 (+1d) | 2027-06-14 → 2027-06-15 (+1d) |  | 42.95d → 41.5d |
| 1 | **Electrical Works** |  | 2027-08-01 → 2027-08-05 (+4d) |  |  |
| TAEXELCL010002 | Road Crossing Ducts |  | 2027-05-23 → 2027-05-27 (+4d) |  | -8.08d → -12.67d |
| TAEXELCL010003 | Drawpit and PVC Pipes Installation |  | 2027-05-19 → 2027-05-24 (+5d) |  | -8.08d → -12.67d |
| TAEXELCL010001 | Trench Cut off | 2027-04-28 → 2027-05-04 (+6d) | 2027-05-12 → 2027-05-18 (+6d) |  | -24.71d → -29.3d |
| TAEXELCL010006 | Poles RC Foundation | 2027-05-19 → 2027-05-24 (+5d) | 2027-05-23 → 2027-05-27 (+4d) |  | 49.76d → 45.17d |
| TAEXELCL010004 | Trench Backfilling | 2027-05-23 → 2027-05-27 (+4d) | 2027-06-03 → 2027-06-08 (+5d) |  | -8.08d → -12.67d |
| TAEXELCL010008 | Lighting Pole Installation with Luminares | 2027-05-23 → 2027-05-27 (+4d) | 2027-05-29 → 2027-06-02 (+4d) |  | 55.76d → 51.17d |
| TAEXELCL010005 | Cables Pulling | 2027-07-26 → 2027-07-31 (+5d) | 2027-07-29 → 2027-08-03 (+5d) |  | -8.08d → -12.67d |
| TAEXELCL010007 | Earthing cables | 2027-07-29 → 2027-08-03 (+5d) | 2027-08-01 → 2027-08-05 (+4d) |  | -8.08d → -12.67d |
| 2 | **Telecommunication Works** | 2027-05-05 → 2027-05-12 (+7d) | 2027-06-20 → 2027-06-27 (+7d) |  |  |
| TAEXTCCL010001 | Trench Cut off | 2027-05-05 → 2027-05-12 (+7d) | 2027-05-13 → 2027-05-20 (+7d) |  | -11.61d → -17.61d |
| TAEXTCCL010002 | Drawpit and PVC Pipes Installation | 2027-06-01 → 2027-06-08 (+7d) | 2027-06-06 → 2027-06-13 (+7d) |  | -14.27d → -20.27d |
| TAEXTCCL010003 | Road Crossing Ducts | 2027-06-06 → 2027-06-13 (+7d) | 2027-06-08 → 2027-06-15 (+7d) |  | 35.73d → 29.73d |
| TAEXTCCL010004 | Trench Backfilling | 2027-06-08 → 2027-06-15 (+7d) | 2027-06-20 → 2027-06-27 (+7d) |  | 35.73d → 29.73d |
| 16 | **CCTV Works** | 2027-04-17 → 2027-04-24 (+7d) | 2027-06-14 → 2027-06-21 (+7d) |  |  |
| TAEXCCCL010001 | Pipe Installation with manhole | 2027-04-17 → 2027-04-24 (+7d) | 2027-05-01 → 2027-05-08 (+7d) |  | -8.55d → -14.55d |
| TAEXCCCL010002 | CCTV Swiches Lighting panels Installation | 2027-05-01 → 2027-05-08 (+7d) | 2027-05-16 → 2027-05-23 (+7d) |  | 50.45d → 44.45d |
| TAEXCCCL010003 | Cable laying and connected with Panels | 2027-05-16 → 2027-05-23 (+7d) | 2027-05-27 → 2027-06-03 (+7d) |  | 50.45d → 44.45d |
| TAEXCCCL010004 | Pole Installation with IP Outdoor CCTV POE Camera | 2027-05-27 → 2027-06-03 (+7d) | 2027-06-14 → 2027-06-21 (+7d) |  | 50.45d → 44.45d |
| 17 | **Potable Networks** |  | 2027-03-14 → 2027-03-21 (+7d) |  |  |
| TAEXPTCL010002 | Bedding Works |  | 2026-10-17 → 2026-10-24 (+7d) |  | 77.72d → 75.22d |
| TAEXPTCL010003 | Install Pipes & Fittings |  | 2027-01-10 → 2027-01-17 (+7d) | 75% → 85% | 89.26d → 84.06d |
| TAEXPTCL010004 | Backfilling Works for Trench |  | 2027-01-14 → 2027-01-19 (+5d) | 75% → 85% | 123.54d → 122.64d |
| TAEXPTCL0100011 | Excavation works for Trench Part 01 |  | 2026-10-12 → 2026-10-19 (+7d) |  | 10.16d → 6.46d |
| TAEXPTCL010007 | Valve Chamber works |  | 2027-03-10 → 2027-03-17 (+7d) |  | 68.04d → 62.04d |
| TAEXPTCL010005 | Install Valves with fittings |  | 2027-01-17 → 2027-01-21 (+4d) |  | 123.54d → 122.64d |
| TAEXPTCL010006 | Install fire hydrent |  | 2027-01-11 → 2027-01-17 (+6d) |  | 94.24d → 89.04d |
| TAEXPTCL010008 | Inspection Test |  | 2027-03-14 → 2027-03-21 (+7d) |  | 123.44d → 117.44d |
| 3 | **TSE Networks** |  | 2027-04-29 → 2027-05-06 (+7d) |  |  |
| TAEXTSCL010002 | Bedding Works |  | 2026-10-17 → 2026-10-24 (+7d) |  | 77.72d → 75.22d |
| TAEXTSCL010003 | Install Pipes & Fittings |  | 2027-04-20 → 2027-04-27 (+7d) |  | 61.54d → 55.54d |

| ID | Task | Start | Finish | Complete | Total float |
| --- | --- | --- | --- | --- | --- |
| TAEXTSCL010004 | Backfilling Works for Trench |  | 2027-04-26 → 2027-05-03 (+7d) |  | 61.54d → 55.54d |
| TAEXTSCL0100011 | Excavation works for Trench Part 01 |  | 2026-10-15 → 2026-10-22 (+7d) |  | 12.04d → 8.34d |
| TAEXTSCL010006 | Valve Chamber works |  | 2027-04-27 → 2027-05-04 (+7d) |  | 93.95d → 87.95d |
| TAEXTSCL010005 | Install Valves with fittings |  | 2027-04-26 → 2027-05-03 (+7d) |  | 61.54d → 55.54d |
| TAEXTSCL010007 | Inspection Test |  | 2027-04-29 → 2027-05-06 (+7d) |  | 93.95d → 87.95d |
| 13 | **Sewerage Networks** |  | 2026-12-15 → 2026-12-22 (+7d) |  |  |
| TAEXSWCL0100011 | Excavation works for Trench Part 01 |  | 2026-11-01 → 2026-11-08 (+7d) |  | 131.47d → 131.68d |
| TAEXSWCL0100021 | Bedding Works Part 01 |  | 2026-11-03 → 2026-11-10 (+7d) |  | 194.6d → 188.6d |
| TAEXSWCL0100031 | Install GRP Pipes & Fittings Part 01 |  | 2026-11-14 → 2026-11-21 (+7d) |  | 194.6d → 188.6d |
| TAEXSWCL0100051 | Manhole Installation with backfilling Part 01 |  | 2026-12-13 → 2026-12-20 (+7d) |  | 194.6d → 188.6d |
| TAEXSWCL0100041 | Backfilling Works for Trench Part 01 |  | 2026-12-01 → 2026-12-08 (+7d) |  | 194.6d → 188.6d |
| TAEXSWCL010006 | Leakage Test |  | 2026-12-15 → 2026-12-22 (+7d) |  | 194.6d → 188.6d |
| 4 | **Storm Networks** |  | 2026-12-21 → 2026-12-28 (+7d) |  |  |
| TAEXSTCL0100051 | Manhole Installation with backfilling Part 01 |  | 2026-12-06 → 2026-12-13 (+7d) |  | 59.39d → 54.79d |
| TAEXSTCL0100011 | Excavation works for Trench & Box Culvert Part 01 |  | 2026-10-15 → 2026-10-22 (+7d) |  | 15.33d → 20.33d |
| TAEXSTCL010006 | Install Catch Basin with UPVC Pipes & Fittings |  | 2026-12-12 → 2026-12-19 (+7d) |  | 59.39d → 54.79d |
| TAEXSTCL0100041 | Backfilling Works for Trench and Boxculvert Part 01 |  | 2026-10-18 → 2026-10-25 (+7d) |  | 99.93d → 95.33d |
| TAEXSTCL0100021 | Bedding Works Part 01 |  | 2026-10-18 → 2026-10-25 (+7d) |  | 77.72d → 75.22d |
| TAEXSTCL0100031 | Install GRP Pipes & Fittings Part 01 |  | 2026-10-19 → 2026-10-26 (+7d) |  | 77.72d → 75.22d |
| TAEXSTCL010007 | Leakage Test | 2026-12-17 → 2026-12-24 (+7d) | 2026-12-21 → 2026-12-28 (+7d) |  | 59.39d → 54.79d |
| 5 | **Local Road 06** |  | 2027-08-15 → 2027-08-21 (+6d) |  |  |
| 12 | **Road Works** |  | 2027-06-23 → 2027-06-24 (+1d) |  |  |
| TAEXRDCL0600031 | Subgrade Works Part 01 | 2027-03-03 → 2027-03-07 (+4d) | 2027-03-08 → 2027-03-11 (+3d) |  | 31.21d → 28.96d |
| TAEXRDCL060004 | ABC aggregate Base Course Works | 2027-03-08 → 2027-03-11 (+3d) | 2027-03-17 → 2027-03-21 (+4d) |  | 31.21d → 28.96d |
| TAEXRDCL060005 | MBC1 layer | 2027-03-17 → 2027-03-21 (+4d) | 2027-03-18 → 2027-03-22 (+4d) |  | 31.21d → 28.96d |
| TAEXRDCL060006 | BBC Base Course | 2027-03-18 → 2027-03-22 (+4d) | 2027-03-25 → 2027-03-29 (+4d) |  | 31.21d → 28.96d |
| TAEXRDCL060008 | Precast Concret Kerps | 2027-04-27 → 2027-04-28 (+1d) | 2027-05-18 → 2027-05-19 (+1d) |  | 3.95d → 2.5d |
| TAEXRDCL060007 | BWC Asphalt Wearing Course with RC | 2027-05-18 → 2027-05-19 (+1d) | 2027-05-20 → 2027-05-22 (+2d) |  | 34.95d → 33.5d |
| TAEXRDCL060009 | Precast Interlock Works | 2027-05-20 → 2027-05-22 (+2d) | 2027-06-06 → 2027-06-07 (+1d) |  | 34.95d → 33.5d |
| TAEXRDCL060010 | Stone Paving works | 2027-06-06 → 2027-06-07 (+1d) | 2027-06-20 → 2027-06-21 (+1d) |  | 34.95d → 33.5d |
| TAEXRDCL060011 | Road Marking | 2027-06-20 → 2027-06-21 (+1d) | 2027-06-21 → 2027-06-22 (+1d) |  | 34.95d → 33.5d |
| TAEXRDCL060012 | Traffic Sinage | 2027-06-21 → 2027-06-22 (+1d) | 2027-06-23 → 2027-06-24 (+1d) |  | 34.95d → 33.5d |
| 1 | **Electrical Works** | 2027-05-12 → 2027-05-18 (+6d) | 2027-08-15 → 2027-08-21 (+6d) |  |  |
| TAEXELCL060001 | Trench Cut off | 2027-05-12 → 2027-05-18 (+6d) | 2027-05-24 → 2027-05-30 (+6d) |  | -24.71d → -29.3d |
| TAEXELCL060002 | Drawpit and PVC Pipes Installation | 2027-05-24 → 2027-05-30 (+6d) | 2027-05-30 → 2027-06-05 (+6d) |  | -18.56d → -23.15d |
| TAEXELCL060003 | Road Crossing Ducts | 2027-05-30 → 2027-06-05 (+6d) | 2027-06-01 → 2027-06-07 (+6d) |  | -18.56d → -23.15d |
| TAEXELCL060006 | Poles RC Foundation | 2027-05-30 → 2027-06-05 (+6d) | 2027-06-03 → 2027-06-09 (+6d) |  | 41.44d → 36.85d |
| TAEXELCL060004 | Trench Backfilling | 2027-06-01 → 2027-06-07 (+6d) | 2027-06-17 → 2027-06-23 (+6d) |  | -18.56d → -23.15d |
| TAEXELCL060008 | Lighting Pole Installation with Luminares | 2027-06-03 → 2027-06-09 (+6d) | 2027-06-10 → 2027-06-16 (+6d) |  | 44.44d → 39.85d |
| TAEXELCL060005 | Cables Pulling | 2027-08-09 → 2027-08-15 (+6d) | 2027-08-12 → 2027-08-18 (+6d) |  | -18.56d → -23.15d |
| TAEXELCL060007 | Earthing cables | 2027-08-12 → 2027-08-18 (+6d) | 2027-08-15 → 2027-08-21 (+6d) |  | -18.56d → -23.15d |
| 2 | **Telecommunication Works** | 2027-05-13 → 2027-05-20 (+7d) | 2027-06-30 → 2027-07-07 (+7d) |  |  |
| TAEXTCCL060001 | Trench Cut off | 2027-05-13 → 2027-05-20 (+7d) | 2027-05-25 → 2027-06-01 (+7d) |  | -11.61d → -17.61d |
| TAEXTCCL060002 | Drawpit and PVC Pipes Installation | 2027-06-06 → 2027-06-13 (+7d) | 2027-06-12 → 2027-06-19 (+7d) |  | -14.27d → -20.27d |
| TAEXTCCL060003 | Road Crossing Ducts | 2027-06-12 → 2027-06-19 (+7d) | 2027-06-14 → 2027-06-21 (+7d) |  | 26.73d → 20.73d |
| TAEXTCCL060004 | Trench Backfilling | 2027-06-14 → 2027-06-21 (+7d) | 2027-06-30 → 2027-07-07 (+7d) |  | 26.73d → 20.73d |
| 17 | **CCTV Works** | 2027-05-01 → 2027-05-08 (+7d) | 2027-06-28 → 2027-07-05 (+7d) |  |  |
| TAEXCCCL060001 | Pipe Installation with manhole | 2027-05-01 → 2027-05-08 (+7d) | 2027-05-15 → 2027-05-22 (+7d) |  | -8.55d → -14.55d |
| TAEXCCCL060002 | CCTV Swiches Lighting panels Installation | 2027-05-15 → 2027-05-22 (+7d) | 2027-05-30 → 2027-06-06 (+7d) |  | 38.45d → 32.45d |
| TAEXCCCL060003 | Cable laying and connected with Panels | 2027-05-30 → 2027-06-06 (+7d) | 2027-06-10 → 2027-06-17 (+7d) |  | 38.45d → 32.45d |
| TAEXCCCL060004 | Pole Installation with IP Outdoor CCTV POE Camera | 2027-06-10 → 2027-06-17 (+7d) | 2027-06-28 → 2027-07-05 (+7d) |  | 38.45d → 32.45d |
| 16 | **Potable Networks** |  | 2027-03-30 → 2027-04-06 (+7d) |  |  |
| TAEXPTCL060001 | Excavation works for Trench |  | 2026-10-28 → 2026-11-04 (+7d) |  | 68.04d → 62.04d |
| TAEXPTCL060003 | Install Pipes & Fittings |  | 2027-01-11 → 2027-01-17 (+6d) |  | 89.26d → 84.06d |
| TAEXPTCL060002 | Bedding Works |  | 2026-11-10 → 2026-11-17 (+7d) |  | 86.2d → 80.2d |
| TAEXPTCL060007 | Valve Chamber works |  | 2027-03-25 → 2027-04-01 (+7d) |  | 68.04d → 62.04d |
| TAEXPTCL060004 | Backfilling Works for Trench |  | 2027-01-20 → 2027-01-19 (-1d) | 50% → 90% | 136.64d → 140.24d |
| TAEXPTCL060005 | Install Valves with fittings |  | 2027-02-08 → 2027-02-14 (+6d) |  | 120.13d → 117.73d |
| TAEXPTCL060006 | Install fire hydrent | 2027-02-07 → 2027-02-13 (+6d) | 2027-02-14 → 2027-02-20 (+6d) |  | 89.26d → 84.06d |
| TAEXPTCL060008 | Inspection Test | 2027-03-25 → 2027-04-01 (+7d) | 2027-03-30 → 2027-04-06 (+7d) |  | 109.84d → 103.84d |
| 3 | **TSE Networks** |  | 2027-05-18 → 2027-05-25 (+7d) |  |  |
| TAEXTSCL060001 | Excavation works for Trench |  | 2026-11-09 → 2026-11-16 (+7d) |  | 57.42d → 51.42d |
| TAEXTSCL060003 | Install Pipes & Fittings |  | 2027-04-24 → 2027-05-01 (+7d) |  | 62.66d → 56.66d |
| TAEXTSCL060002 | Bedding Works |  | 2026-11-10 → 2026-11-17 (+7d) |  | 86.2d → 80.2d |
| TAEXTSCL060004 | Backfilling Works for Trench |  | 2027-04-28 → 2027-05-05 (+7d) |  | 62.66d → 56.66d |
| TAEXTSCL060007 | Inspection Test |  | 2027-05-18 → 2027-05-25 (+7d) |  | 74.55d → 68.55d |
| TAEXTSCL060006 | Valve Chamber works |  | 2027-05-17 → 2027-05-24 (+7d) |  | 74.55d → 68.55d |
| TAEXTSCL060005 | Install Valves with fittings |  | 2027-04-29 → 2027-05-06 (+7d) |  | 61.54d → 55.54d |
| 14 | **Sewerage Networks** |  | 2027-03-07 → 2027-03-09 (+2d) |  |  |
| TAEXSWCL060006 | Leakage Test |  | 2027-03-07 → 2027-03-09 (+2d) |  | 124.96d → 122.71d |

| ID | Task | Start | Finish | Complete | Total float |
| --- | --- | --- | --- | --- | --- |
| TAEXSWCL0600021 | Bedding Works Part 01 |  | 2026-10-21 → 2026-10-28 (+7d) |  | 221.55d → 215.55d |
| TAEXSWCL0600031 | Install GRP Pipes & Fittings Part 01 |  | 2026-10-25 → 2026-11-01 (+7d) |  | 221.55d → 215.55d |
| TAEXSWCL0600051 | Manhole Installation with backfilling Part 01 |  | 2026-12-07 → 2026-12-14 (+7d) |  | 198.9d → 192.9d |
| TAEXSWCL0600041 | Backfilling Works for Trench Part 01 | 2026-10-31 → 2026-11-07 (+7d) | 2026-11-11 → 2026-11-18 (+7d) |  | 221.55d → 215.55d |
| 4 | **Storm Networks** |  | 2027-03-03 → 2027-03-07 (+4d) |  |  |
| TAEXSTCL060001 | Excavation works for Trench |  | 2026-10-18 → 2026-10-25 (+7d) |  | 15.33d → 20.33d |
| TAEXSTCL060002 | Bedding Works |  | 2026-11-11 → 2026-11-18 (+7d) |  | 86.2d → 80.2d |
| TAEXSTCL060003 | Install GRP Pipes & Fittings |  | 2026-11-12 → 2026-11-19 (+7d) |  | 86.2d → 80.2d |
| TAEXSTCL060005 | Manhole Installation with backfilling |  | 2026-12-12 → 2026-12-19 (+7d) | 60% → 75% | 86.2d → 80.2d |
| TAEXSTCL060004 | Backfilling Works for Trench |  | 2026-11-30 → 2026-12-07 (+7d) |  | 86.2d → 80.2d |
| TAEXSTCL060006 | Install Catch Basin with UPVC Pipes & Fittings | 2027-02-14 → 2027-02-17 (+3d) | 2027-02-28 → 2027-03-03 (+3d) |  | 31.21d → 28.96d |
| TAEXSTCL060007 | Leakage Test | 2027-02-28 → 2027-03-03 (+3d) | 2027-03-03 → 2027-03-07 (+4d) |  | 31.21d → 28.96d |
| 2 | **Local Road 07** |  | 2027-08-17 → 2027-08-23 (+6d) |  |  |
| 12 | **Road Works** |  | 2027-07-28 → 2027-07-29 (+1d) |  |  |
| TAEXRDCL070004 | ABC aggregate Base Course Works | 2027-04-05 → 2027-04-06 (+1d) | 2027-04-08 → 2027-04-10 (+2d) |  | 26.67d → 27.4d |
| TAEXRDCL070005 | MBC1 layer | 2027-04-08 → 2027-04-10 (+2d) | 2027-04-10 → 2027-04-11 (+1d) |  | 26.67d → 27.4d |
| TAEXRDCL070006 | BBC Base Course | 2027-04-10 → 2027-04-11 (+1d) | 2027-04-12 → 2027-04-13 (+1d) |  | 26.67d → 27.4d |
| TAEXRDCL070008 | Precast Concret Kerps | 2027-05-18 → 2027-05-19 (+1d) | 2027-06-08 → 2027-06-09 (+1d) |  | 3.95d → 2.5d |
| TAEXRDCL070007 | BWC Asphalt Wearing Course with RC | 2027-06-08 → 2027-06-09 (+1d) | 2027-06-09 → 2027-06-10 (+1d) |  | 4.95d → 3.5d |
| TAEXRDCL070009 | Precast Interlock Works | 2027-06-19 → 2027-06-20 (+1d) | 2027-07-07 → 2027-07-08 (+1d) |  | 4.95d → 3.5d |
| TAEXRDCL070010 | Stone Paving works | 2027-07-07 → 2027-07-08 (+1d) | 2027-07-25 → 2027-07-26 (+1d) |  | 4.95d → 3.5d |
| TAEXRDCL070011 | Road Marking | 2027-07-25 → 2027-07-26 (+1d) | 2027-07-26 → 2027-07-27 (+1d) |  | 4.95d → 3.5d |
| TAEXRDCL070012 | Traffic Sinage | 2027-07-26 → 2027-07-27 (+1d) | 2027-07-28 → 2027-07-29 (+1d) |  | 4.95d → 3.5d |
| 1 | **Electrical Works** | 2027-05-24 → 2027-05-30 (+6d) | 2027-08-17 → 2027-08-23 (+6d) |  |  |
| TAEXELCL070001 | Trench Cut off | 2027-05-24 → 2027-05-30 (+6d) | 2027-06-07 → 2027-06-13 (+6d) |  | -24.71d → -29.3d |
| TAEXELCL070002 | Drawpit and PVC Pipes Installation | 2027-06-07 → 2027-06-13 (+6d) | 2027-06-16 → 2027-06-22 (+6d) |  | 17.44d → 12.85d |
| TAEXELCL070003 | Road Crossing Ducts | 2027-06-16 → 2027-06-22 (+6d) | 2027-06-19 → 2027-06-24 (+5d) |  | 17.44d → 12.85d |
| TAEXELCL070006 | Poles RC Foundation | 2027-06-16 → 2027-06-22 (+6d) | 2027-06-20 → 2027-06-26 (+6d) |  | 29.44d → 24.85d |
| TAEXELCL070004 | Trench Backfilling | 2027-06-19 → 2027-06-24 (+5d) | 2027-06-30 → 2027-07-06 (+6d) |  | 17.44d → 12.85d |
| TAEXELCL070008 | Lighting Pole Installation with Luminares | 2027-06-20 → 2027-06-26 (+6d) | 2027-06-26 → 2027-07-01 (+5d) |  | 31.44d → 26.85d |
| TAEXELCL070005 | Cables Pulling | 2027-06-30 → 2027-07-06 (+6d) | 2027-07-04 → 2027-07-10 (+6d) |  | 17.44d → 12.85d |
| TAEXELCL070007 | Earthing cables | 2027-08-15 → 2027-08-21 (+6d) | 2027-08-17 → 2027-08-23 (+6d) |  | -18.56d → -23.15d |
| 2 | **Telecommunication Works** | 2027-05-25 → 2027-06-01 (+7d) | 2027-06-30 → 2027-07-07 (+7d) |  |  |
| TAEXTCCL070001 | Trench Cut off | 2027-05-25 → 2027-06-01 (+7d) | 2027-06-01 → 2027-06-08 (+7d) |  | -11.61d → -17.61d |
| TAEXTCCL070002 | Drawpit and PVC Pipes Installation | 2027-06-12 → 2027-06-19 (+7d) | 2027-06-16 → 2027-06-23 (+7d) |  | -14.27d → -20.27d |
| TAEXTCCL070003 | Road Crossing Ducts | 2027-06-16 → 2027-06-23 (+7d) | 2027-06-19 → 2027-06-26 (+7d) |  | 26.73d → 20.73d |
| TAEXTCCL070004 | Trench Backfilling | 2027-06-19 → 2027-06-26 (+7d) | 2027-06-30 → 2027-07-07 (+7d) |  | 26.73d → 20.73d |
| 18 | **CCTV Works** | 2027-05-15 → 2027-05-22 (+7d) | 2027-07-05 → 2027-07-12 (+7d) |  |  |
| TAEXCCCL070001 | Pipe Installation with manhole | 2027-05-15 → 2027-05-22 (+7d) | 2027-05-25 → 2027-06-01 (+7d) |  | -8.55d → -14.55d |
| TAEXCCCL070002 | CCTV Swiches Lighting panels Installation | 2027-05-25 → 2027-06-01 (+7d) | 2027-06-08 → 2027-06-15 (+7d) |  | 32.45d → 26.45d |
| TAEXCCCL070003 | Cable laying and connected with Panels | 2027-06-08 → 2027-06-15 (+7d) | 2027-06-20 → 2027-06-27 (+7d) |  | 32.45d → 26.45d |
| TAEXCCCL070004 | Pole Installation with IP Outdoor CCTV POE Camera | 2027-06-20 → 2027-06-27 (+7d) | 2027-07-05 → 2027-07-12 (+7d) |  | 32.45d → 26.45d |
| 3 | **Potable Networks** |  | 2027-04-15 → 2027-04-22 (+7d) |  |  |
| TAEXPTCL070002 | Bedding Works |  | 2026-10-18 → 2026-10-25 (+7d) |  | 162.2d → 156.2d |
| TAEXPTCL070003 | Install Pipes & Fittings |  | 2027-01-17 → 2027-01-23 (+6d) |  | 89.26d → 84.06d |
| TAEXPTCL070004 | Backfilling Works for Trench |  | 2027-01-25 → 2027-01-31 (+6d) |  | 120.13d → 117.73d |
| TAEXPTCL070005 | Install Valves with fittings |  | 2027-01-25 → 2027-01-31 (+6d) |  | 120.13d → 117.73d |
| TAEXPTCL0700011 | Excavation works for Trench Part 01 | 2026-10-12 → 2026-10-19 (+7d) | 2026-10-17 → 2026-10-24 (+7d) |  | 10.16d → 6.46d |
| TAEXPTCL070006 | Install fire hydrent | 2027-01-17 → 2027-01-23 (+6d) | 2027-01-23 → 2027-01-28 (+5d) |  | 89.26d → 84.06d |
| TAEXPTCL070007 | Valve Chamber works | 2027-03-25 → 2027-04-01 (+7d) | 2027-04-11 → 2027-04-18 (+7d) |  | 68.04d → 62.04d |
| TAEXPTCL070008 | Inspection Test | 2027-04-11 → 2027-04-18 (+7d) | 2027-04-15 → 2027-04-22 (+7d) |  | 95.84d → 89.84d |
| 4 | **TSE Networks** |  | 2027-05-25 → 2027-06-01 (+7d) |  |  |
| TAEXTSCL070005 | Install Valves with fittings |  | 2027-05-05 → 2027-05-12 (+7d) |  | 61.54d → 55.54d |
| TAEXTSCL070006 | Valve Chamber works |  | 2027-05-20 → 2027-05-27 (+7d) |  | 61.54d → 55.54d |
| TAEXTSCL0700011 | Excavation works for Trench Part 01 | 2026-10-15 → 2026-10-22 (+7d) | 2026-10-20 → 2026-10-27 (+7d) |  | 12.04d → 8.34d |
| TAEXTSCL0700021 | Bedding Works Part 01 | 2026-10-20 → 2026-10-27 (+7d) | 2026-10-21 → 2026-10-28 (+7d) |  | 170.85d → 172.45d |
| TAEXTSCL0700031 | Install Pipes & Fittings Part 01 | 2026-10-21 → 2026-10-28 (+7d) | 2026-10-27 → 2026-11-03 (+7d) |  | 170.85d → 172.45d |
| TAEXTSCL0700041 | Backfilling Works for Trench Part 01 | 2026-10-27 → 2026-11-03 (+7d) | 2026-11-05 → 2026-11-12 (+7d) |  | 181.57d → 178.37d |
| TAEXTSCL070007 | Inspection Test | 2027-05-20 → 2027-05-27 (+7d) | 2027-05-25 → 2027-06-01 (+7d) |  | 61.54d → 55.54d |
| 15 | **Sewerage Networks** |  | 2026-12-03 → 2026-12-10 (+7d) |  |  |
| TAEXSWCL070003 | Install GRP Pipes & Fittings |  | 2026-10-21 → 2026-10-17 A (-4d) | 95% → 100% | 213.9d → none |
| TAEXSWCL070005 | Manhole Installation with backfilling |  | 2026-11-30 → 2026-12-07 (+7d) |  | 204.15d → 198.15d |
| TAEXSWCL070004 | Backfilling Works for Trench | 2026-10-22 → 2026-10-26 (+4d) | 2026-11-08 → 2026-11-11 (+3d) |  | 213.9d → 210.2d |
| TAEXSWCL070006 | Leakage Test | 2026-11-30 → 2026-12-07 (+7d) | 2026-12-03 → 2026-12-10 (+7d) |  | 204.15d → 198.15d |
| 5 | **Storm Networks** |  | 2027-02-17 → 2027-02-18 (+1d) |  |  |
| TAEXSTCL070007 | Leakage Test | 2027-02-14 → 2026-10-17 A (-120d) | 2027-02-17 → 2027-02-18 (+1d) | 0% → 50% | 26.67d → 27.4d |
| TAEXSTCL0700011 | Excavation works for Trench Part 01 | 2026-10-18 → 2026-10-25 (+7d) | 2026-10-22 → 2026-10-29 (+7d) |  | 15.33d → 20.33d |
| TAEXSTCL0700021 | Bedding Works Part 01 | 2026-10-22 → 2026-10-29 (+7d) | 2026-10-24 → 2026-10-31 (+7d) |  | 84.45d → 81.43d |
| TAEXSTCL0700031 | Install GRP Pipes & Fittings Part 01 | 2026-10-24 → 2026-10-31 (+7d) | 2026-10-29 → 2026-11-05 (+7d) |  | 84.45d → 81.43d |
| TAEXSTCL0700041 | Backfilling Works for Trench Part 01 | 2026-11-07 → 2026-11-14 (+7d) | 2026-11-16 → 2026-11-23 (+7d) |  | 84.45d → 81.43d |

| ID | Task | Start | Finish | Complete | Total float |
| --- | --- | --- | --- | --- | --- |
| TAEXSTCL0700051 | Manhole Installation with backfilling Part 01 | 2026-12-05 → 2026-12-12 (+7d) | 2026-12-10 → 2026-12-17 (+7d) |  | 72.92d → 69.9d |
| TAEXSTCL070006 | Install Catch Basin with UPVC Pipes & Fittings | 2027-02-02 → 2027-02-06 (+4d) | 2027-02-14 → 2027-02-17 (+3d) |  | 26.67d → 27.4d |
| 6 | **Local Road 08** |  | 2027-08-19 → 2027-08-25 (+6d) |  |  |
| 12 | **Road Works** |  | 2027-07-27 → 2027-07-28 (+1d) |  |  |
| TAEXRDCL0800011 | Road Excavation and Disposal Part 01 | 2027-03-03 → 2027-03-07 (+4d) | 2027-03-09 → 2027-03-13 (+4d) |  | 35.67d → 34.9d |
| TAEXRDCL0800021 | Backfilling Works for Road Part 01 | 2027-03-09 → 2027-03-13 (+4d) | 2027-03-17 → 2027-03-21 (+4d) |  | 35.67d → 34.9d |
| TAEXRDCL0800031 | Subgrade Works Part 01 | 2027-03-17 → 2027-03-21 (+4d) | 2027-03-22 → 2027-03-25 (+3d) |  | 35.67d → 34.9d |
| TAEXRDCL080004 | ABC aggregate Base Course Works | 2027-03-22 → 2027-03-25 (+3d) | 2027-03-27 → 2027-03-30 (+3d) |  | 35.67d → 34.9d |
| TAEXRDCL080005 | MBC1 layer | 2027-03-27 → 2027-03-30 (+3d) | 2027-03-28 → 2027-03-31 (+3d) |  | 35.67d → 34.9d |
| TAEXRDCL080006 | BBC Base Course | 2027-03-28 → 2027-03-31 (+3d) | 2027-04-01 → 2027-04-05 (+4d) |  | 35.67d → 34.9d |
| TAEXRDCL080008 | Precast Concret Kerps | 2027-06-08 → 2027-06-09 (+1d) | 2027-06-24 → 2027-06-26 (+2d) |  | 3.95d → 2.5d |
| TAEXRDCL080007 | BWC Asphalt Wearing Course with RC | 2027-06-24 → 2027-06-26 (+2d) | 2027-06-26 → 2027-06-27 (+1d) |  | 5.95d → 4.5d |
| TAEXRDCL080009 | Precast Interlock Works | 2027-06-26 → 2027-06-27 (+1d) | 2027-07-15 → 2027-07-17 (+2d) |  | 5.95d → 4.5d |
| TAEXRDCL080010 | Stone Paving works | 2027-07-15 → 2027-07-17 (+2d) | 2027-07-24 → 2027-07-25 (+1d) |  | 5.95d → 4.5d |
| TAEXRDCL080011 | Road Marking | 2027-07-24 → 2027-07-25 (+1d) | 2027-07-25 → 2027-07-26 (+1d) |  | 5.95d → 4.5d |
| TAEXRDCL080012 | Traffic Sinage | 2027-07-25 → 2027-07-26 (+1d) | 2027-07-27 → 2027-07-28 (+1d) |  | 5.95d → 4.5d |
| 1 | **Electrical Works** |  | 2027-08-19 → 2027-08-25 (+6d) |  |  |
| TAEXELCL080001 | Trench Cut off | 2027-06-07 → 2027-06-13 (+6d) | 2027-06-19 → 2027-06-24 (+5d) |  | -24.71d → -29.3d |
| TAEXELCL080002 | Drawpit and PVC Pipes Installation | 2027-06-19 → 2027-06-24 (+5d) | 2027-06-24 → 2027-06-30 (+6d) |  | 8.44d → 3.85d |
| TAEXELCL080003 | Road Crossing Ducts | 2027-06-24 → 2027-06-30 (+6d) | 2027-06-27 → 2027-07-03 (+6d) |  | 8.44d → 3.85d |
| TAEXELCL080006 | Poles RC Foundation | 2027-06-24 → 2027-06-30 (+6d) | 2027-06-29 → 2027-07-05 (+6d) |  | 22.44d → 17.85d |
| TAEXELCL080004 | Trench Backfilling | 2027-06-27 → 2027-07-03 (+6d) | 2027-07-13 → 2027-07-19 (+6d) |  | 8.44d → 3.85d |
| TAEXELCL080008 | Lighting Pole Installation with Luminares | 2027-06-29 → 2027-07-05 (+6d) | 2027-07-06 → 2027-07-12 (+6d) |  | 22.44d → 17.85d |
| TAEXELCL080005 | Cables Pulling | 2027-07-13 → 2027-07-19 (+6d) | 2027-07-17 → 2027-07-22 (+5d) |  | 8.44d → 3.85d |
| TAEXELCL080007 | Earthing cables | 2027-08-17 → 2027-08-23 (+6d) | 2027-08-19 → 2027-08-25 (+6d) |  | -18.56d → -23.15d |
| 2 | **Telecommunication Works** | 2027-06-01 → 2027-06-08 (+7d) | 2027-07-11 → 2027-07-18 (+7d) |  |  |
| TAEXTCCL080001 | Trench Cut off | 2027-06-01 → 2027-06-08 (+7d) | 2027-06-13 → 2027-06-20 (+7d) |  | -11.61d → -17.61d |
| TAEXTCCL080002 | Drawpit and PVC Pipes Installation | 2027-06-16 → 2027-06-23 (+7d) | 2027-06-22 → 2027-06-29 (+7d) |  | -14.27d → -20.27d |
| TAEXTCCL080003 | Road Crossing Ducts | 2027-06-22 → 2027-06-29 (+7d) | 2027-06-24 → 2027-07-01 (+7d) |  | 17.73d → 11.73d |
| TAEXTCCL080004 | Trench Backfilling | 2027-06-24 → 2027-07-01 (+7d) | 2027-07-11 → 2027-07-18 (+7d) |  | 17.73d → 11.73d |
| 19 | **CCTV Works** | 2027-05-25 → 2027-06-01 (+7d) | 2027-07-18 → 2027-07-25 (+7d) |  |  |
| TAEXCCCL080001 | Pipe Installation with manhole | 2027-05-25 → 2027-06-01 (+7d) | 2027-06-03 → 2027-06-10 (+7d) |  | -8.55d → -14.55d |
| TAEXCCCL080002 | CCTV Swiches Lighting panels Installation | 2027-06-03 → 2027-06-10 (+7d) | 2027-06-19 → 2027-06-26 (+7d) |  | 21.45d → 15.45d |
| TAEXCCCL080003 | Cable laying and connected with Panels | 2027-06-19 → 2027-06-26 (+7d) | 2027-06-30 → 2027-07-07 (+7d) |  | 21.45d → 15.45d |
| TAEXCCCL080004 | Pole Installation with IP Outdoor CCTV POE Camera | 2027-06-30 → 2027-07-07 (+7d) | 2027-07-18 → 2027-07-25 (+7d) |  | 21.45d → 15.45d |
| 3 | **Potable Networks** |  | 2027-04-29 → 2027-05-06 (+7d) |  |  |
| TAEXPTCL080001 | Excavation works for Trench |  | 2026-10-31 → 2026-11-07 (+7d) |  | 68.04d → 62.04d |
| TAEXPTCL080003 | Install Pipes & Fittings |  | 2027-01-20 → 2027-01-25 (+5d) | 60% → 70% | 125.46d → 123.86d |
| TAEXPTCL080002 | Bedding Works |  | 2026-11-01 → 2026-11-08 (+7d) | 60% → 75% | 164.91d → 168.01d |
| TAEXPTCL080006 | Install fire hydrent |  | 2027-02-20 → 2027-02-25 (+5d) |  | 110.01d → 105.76d |
| TAEXPTCL080007 | Valve Chamber works |  | 2027-04-25 → 2027-05-02 (+7d) |  | 68.04d → 62.04d |
| TAEXPTCL080004 | Backfilling Works for Trench | 2027-01-20 → 2027-01-25 (+5d) | 2027-02-07 → 2027-02-11 (+4d) |  | 125.46d → 123.86d |
| TAEXPTCL080005 | Install Valves with fittings | 2027-02-08 → 2027-02-14 (+6d) | 2027-02-13 → 2027-02-18 (+5d) |  | 120.13d → 117.73d |
| TAEXPTCL080008 | Inspection Test | 2027-04-25 → 2027-05-02 (+7d) | 2027-04-29 → 2027-05-06 (+7d) |  | 79.04d → 73.04d |
| 4 | **TSE Networks** |  | 2027-05-04 → 2027-05-11 (+7d) |  |  |
| TAEXTSCL080001 | Excavation works for Trench |  | 2026-11-14 → 2026-11-21 (+7d) |  | 57.42d → 51.42d |
| TAEXTSCL080002 | Bedding Works | 2026-10-10 A → 2026-10-17 A (+7d) | 2026-11-16 → 2026-11-21 (+5d) | 0% → 60% | 154.47d → 157.27d |
| TAEXTSCL080003 | Install Pipes & Fittings | 2026-11-16 → 2026-10-17 A (-30d) |  | 0% → 60% | 154.47d → 157.27d |
| TAEXTSCL080007 | Inspection Test | 2027-04-29 → 2027-05-06 (+7d) | 2027-05-04 → 2027-05-11 (+7d) |  | 79.04d → 73.04d |
| 16 | **Sewerage Networks** |  | 2026-12-02 → 2026-12-08 (+6d) |  |  |
| TAEXSWCL080006 | Leakage Test |  | 2026-12-02 → 2026-12-08 (+6d) | 30% → 70% | 205.75d → 200.95d |
| TAEXSWCL0800051 | Manhole Installation with backfilling Part 01 |  | 2026-11-30 → 2026-12-07 (+7d) |  | 205.75d → 200.95d |
| 5 | **Storm Networks** |  | 2027-01-20 → 2027-01-25 (+5d) |  |  |
| TAEXSTCL0800051 | Manhole Installation with backfilling Part 01 |  | 2026-12-07 → 2026-12-14 (+7d) |  | 8.45d → 7d |
| TAEXSTCL080007 | Leakage Test |  | 2027-01-20 → 2027-01-25 (+5d) | 30% → 70% | 88.32d → 85d |
| TAEXSTCL0800021 | Bedding Works Part 01 |  | 2026-10-22 → 2026-10-17 A (-5d) | 85% → 100% | 15.33d → none |
| TAEXSTCL0800031 | Install GRP Pipes & Fittings Part 01 | 2026-10-22 → 2026-10-17 A (-5d) | 2026-10-31 → 2026-10-29 (-2d) | 0% → 90% | 15.33d → 20.33d |
| TAEXSTCL0800041 | Backfilling Works for Trench Part 01 | 2026-11-09 → 2026-10-17 A (-23d) | 2026-11-17 → 2026-11-16 (-1d) | 0% → 90% | 15.33d → 20.33d |
| TAEXSTCL080006 | Install Catch Basin with UPVC Pipes & Fittings | 2026-12-07 → 2026-12-14 (+7d) | 2026-12-20 → 2026-12-27 (+7d) |  | 8.45d → 7d |
| 3 | **Local Road 09** |  | 2027-08-22 → 2027-08-28 (+6d) |  |  |
| 12 | **Road Works** |  | 2027-07-29 → 2027-07-31 (+2d) |  |  |
| TAEXRDCL090004 | ABC aggregate Base Course Works | 2027-02-25 → 2027-03-04 (+7d) | 2027-03-03 → 2027-03-10 (+7d) |  | 57.47d → 52.95d |
| TAEXRDCL090005 | MBC1 layer | 2027-03-03 → 2027-03-10 (+7d) | 2027-03-04 → 2027-03-11 (+7d) |  | 57.47d → 52.95d |
| TAEXRDCL090006 | BBC Base Course | 2027-03-04 → 2027-03-11 (+7d) | 2027-03-07 → 2027-03-14 (+7d) |  | 57.47d → 52.95d |
| TAEXRDCL090008 | Precast Concret Kerps | 2027-06-24 → 2027-06-26 (+2d) | 2027-07-10 → 2027-07-11 (+1d) |  | 3.95d → 2.5d |
| TAEXRDCL090007 | BWC Asphalt Wearing Course with RC | 2027-07-10 → 2027-07-11 (+1d) | 2027-07-11 → 2027-07-12 (+1d) |  | 3.95d → 2.5d |
| TAEXRDCL090009 | Precast Interlock Works | 2027-07-11 → 2027-07-12 (+1d) | 2027-07-25 → 2027-07-26 (+1d) |  | 3.95d → 2.5d |
| TAEXRDCL090010 | Stone Paving works | 2027-07-25 → 2027-07-26 (+1d) | 2027-07-27 → 2027-07-28 (+1d) |  | 3.95d → 2.5d |
| TAEXRDCL090011 | Road Marking | 2027-07-27 → 2027-07-28 (+1d) | 2027-07-28 → 2027-07-29 (+1d) |  | 3.95d → 2.5d |
| TAEXRDCL090012 | Traffic Sinage | 2027-07-28 → 2027-07-29 (+1d) | 2027-07-29 → 2027-07-31 (+2d) |  | 3.95d → 2.5d |

| ID | Task | Start | Finish | Complete | Total float |
| --- | --- | --- | --- | --- | --- |
| 1 | **Electrical Works** | 2027-06-19 → 2027-06-24 (+5d) | 2027-08-22 → 2027-08-28 (+6d) |  |  |
| TAEXELCL090001 | Trench Cut off | 2027-06-19 → 2027-06-24 (+5d) | 2027-07-01 → 2027-07-07 (+6d) |  | -24.71d → -29.3d |
| TAEXELCL090002 | Drawpit and PVC Pipes Installation | 2027-07-01 → 2027-07-07 (+6d) | 2027-07-12 → 2027-07-18 (+6d) |  | 0.44d → -4.15d |
| TAEXELCL090003 | Road Crossing Ducts | 2027-07-12 → 2027-07-18 (+6d) | 2027-07-14 → 2027-07-20 (+6d) |  | 0.44d → -4.15d |
| TAEXELCL090006 | Poles RC Foundation | 2027-07-12 → 2027-07-18 (+6d) | 2027-07-15 → 2027-07-21 (+6d) |  | 10.44d → 5.85d |
| TAEXELCL090004 | Trench Backfilling | 2027-07-14 → 2027-07-20 (+6d) | 2027-07-26 → 2027-08-01 (+6d) |  | 0.44d → -4.15d |
| TAEXELCL090008 | Lighting Pole Installation with Luminares | 2027-07-15 → 2027-07-21 (+6d) | 2027-07-20 → 2027-07-26 (+6d) |  | 10.44d → 5.85d |
| TAEXELCL090005 | Cables Pulling | 2027-07-26 → 2027-08-01 (+6d) | 2027-07-28 → 2027-08-03 (+6d) |  | 0.44d → -4.15d |
| TAEXELCL090007 | Earthing cables | 2027-08-19 → 2027-08-25 (+6d) | 2027-08-22 → 2027-08-28 (+6d) |  | -18.56d → -23.15d |
| 2 | **Telecommunication Works** | 2027-06-13 → 2027-06-20 (+7d) | 2027-07-11 → 2027-07-18 (+7d) |  |  |
| TAEXTCCL090001 | Trench Cut off | 2027-06-13 → 2027-06-20 (+7d) | 2027-06-19 → 2027-06-26 (+7d) |  | -11.61d → -17.61d |
| TAEXTCCL090002 | Drawpit and PVC Pipes Installation | 2027-06-22 → 2027-06-29 (+7d) | 2027-06-27 → 2027-07-04 (+7d) |  | -14.27d → -20.27d |
| TAEXTCCL090003 | Road Crossing Ducts | 2027-06-27 → 2027-07-04 (+7d) | 2027-06-29 → 2027-07-06 (+7d) |  | 17.73d → 11.73d |
| TAEXTCCL090004 | Trench Backfilling | 2027-06-29 → 2027-07-06 (+7d) | 2027-07-11 → 2027-07-18 (+7d) |  | 17.73d → 11.73d |
| 20 | **CCTV Works** | 2027-06-03 → 2027-06-10 (+7d) | 2027-07-17 → 2027-07-24 (+7d) |  |  |
| TAEXCCCL090001 | Pipe Installation with manhole | 2027-06-03 → 2027-06-10 (+7d) | 2027-06-12 → 2027-06-19 (+7d) |  | -8.55d → -14.55d |
| TAEXCCCL090002 | CCTV Swiches Lighting panels Installation | 2027-06-12 → 2027-06-19 (+7d) | 2027-06-23 → 2027-06-30 (+7d) |  | 22.45d → 16.45d |
| TAEXCCCL090003 | Cable laying and connected with Panels | 2027-06-23 → 2027-06-30 (+7d) | 2027-07-03 → 2027-07-10 (+7d) |  | 22.45d → 16.45d |
| TAEXCCCL090004 | Pole Installation with IP Outdoor CCTV POE Camera | 2027-07-03 → 2027-07-10 (+7d) | 2027-07-17 → 2027-07-24 (+7d) |  | 22.45d → 16.45d |
| 3 | **Potable Networks** |  | 2027-05-15 → 2027-05-22 (+7d) |  |  |
| TAEXPTCL090005 | Install Valves with fittings |  | 2027-01-27 → 2027-02-02 (+6d) |  | 120.13d → 117.73d |
| TAEXPTCL090006 | Install fire hydrent | 2027-01-23 → 2027-01-28 (+5d) | 2027-01-30 → 2027-02-04 (+5d) |  | 89.26d → 84.06d |
| TAEXPTCL090007 | Valve Chamber works | 2027-04-25 → 2027-05-02 (+7d) | 2027-05-11 → 2027-05-18 (+7d) |  | 68.04d → 62.04d |
| TAEXPTCL090008 | Inspection Test | 2027-05-11 → 2027-05-18 (+7d) | 2027-05-15 → 2027-05-22 (+7d) |  | 70.04d → 64.04d |
| 4 | **TSE Networks** |  | 2027-05-22 → 2027-05-29 (+7d) |  |  |
| TAEXTSCL090005 | Install Valves with fittings |  | 2027-05-02 → 2027-05-09 (+7d) |  | 61.54d → 55.54d |
| TAEXTSCL0900011 | Excavation works for Trench Part 01 | 2026-10-20 → 2026-10-27 (+7d) | 2026-11-03 → 2026-11-10 (+7d) |  | 12.04d → 8.34d |
| TAEXTSCL090002 | Bedding Works | 2026-11-03 → 2026-11-10 (+7d) | 2026-11-05 → 2026-11-12 (+7d) |  | 45.29d → 43.84d |
| TAEXTSCL090006 | Valve Chamber works | 2027-05-02 → 2027-05-09 (+7d) | 2027-05-18 → 2027-05-25 (+7d) |  | 64.69d → 58.69d |
| TAEXTSCL090007 | Inspection Test | 2027-05-18 → 2027-05-25 (+7d) | 2027-05-22 → 2027-05-29 (+7d) |  | 64.69d → 58.69d |
| 17 | **Sewerage Networks** |  | 2026-12-05 → 2026-12-10 (+5d) |  |  |
| TAEXSWCL090006 | Leakage Test |  | 2026-12-05 → 2026-10-17 A (-49d) | 50% → 100% | 203.25d → none |
| TAEXSWCL0900051 | Manhole Installation with backfilling Part 01 |  | 2026-12-03 → 2026-12-10 (+7d) |  | 203.25d → 198.75d |
| TAEXSWCL0900041 | Backfilling Works for Trench Part 01 | 2026-10-12 → 2026-10-19 (+7d) | 2026-10-20 → 2026-10-27 (+7d) |  | 240.5d → 236d |
| 5 | **Storm Networks** |  | 2027-01-04 → 2027-01-11 (+7d) |  |  |
| TAEXSTCL090005 | Manhole Installation with backfilling |  | 2026-12-06 → 2026-12-13 (+7d) |  | 20.35d → 18.9d |
| TAEXSTCL090007 | Leakage Test |  | 2027-01-04 → 2027-01-11 (+7d) |  | 57.47d → 52.95d |
| TAEXSTCL090006 | Install Catch Basin with UPVC Pipes & Fittings | 2026-12-24 → 2026-12-31 (+7d) | 2027-01-04 → 2027-01-11 (+7d) |  | 3.95d → 2.5d |
| 4 | **Upgrade Local 06** |  | 2027-08-28 → 2027-09-02 (+5d) |  |  |
| 22 | **Electrical Works** |  | 2027-08-28 → 2027-09-02 (+5d) |  |  |
| TAEXELCU060002 | Drawpit and PVC Pipes Installation |  | 2027-08-07 → 2027-08-12 (+5d) |  | -21.69d → -26.28d |
| TAEXELCU060003 | Road Crossing Ducts |  | 2027-08-09 → 2027-08-15 (+6d) |  | -21.69d → -26.28d |
| TAEXELCU060001 | Trench Cut off | 2027-07-21 → 2027-07-27 (+6d) | 2027-08-02 → 2027-08-08 (+6d) |  | -24.71d → -29.3d |
| TAEXELCU060006 | Poles RC Foundation | 2027-08-07 → 2027-08-12 (+5d) | 2027-08-11 → 2027-08-17 (+6d) |  | -14.68d → -19.27d |
| TAEXELCU060004 | Trench Backfilling | 2027-08-09 → 2027-08-15 (+6d) | 2027-08-21 → 2027-08-26 (+5d) |  | -21.69d → -26.28d |
| TAEXELCU060008 | Lighting Pole Installation with Luminares | 2027-08-11 → 2027-08-17 (+6d) | 2027-08-18 → 2027-08-24 (+6d) |  | -14.68d → -19.27d |
| TAEXELCU060005 | Cables Pulling | 2027-08-21 → 2027-08-26 (+5d) | 2027-08-25 → 2027-08-31 (+6d) |  | -21.69d → -26.28d |
| TAEXELCU060007 | Earthing cables | 2027-08-25 → 2027-08-31 (+6d) | 2027-08-28 → 2027-09-02 (+5d) |  | -21.69d → -26.28d |
| 23 | **CCTV Works** | 2027-06-20 → 2027-06-27 (+7d) | 2027-08-02 → 2027-08-09 (+7d) |  |  |
| TAEXCCCU060001 | Pipe Installation with manhole | 2027-06-20 → 2027-06-27 (+7d) | 2027-06-29 → 2027-07-06 (+7d) |  | -3.55d → -9.55d |
| TAEXCCCU060002 | CCTV Swiches Lighting panels Installation | 2027-06-29 → 2027-07-06 (+7d) | 2027-07-11 → 2027-07-18 (+7d) |  | 8.45d → 2.45d |
| TAEXCCCU060003 | Cable laying and connected with Panels | 2027-07-11 → 2027-07-18 (+7d) | 2027-07-21 → 2027-07-28 (+7d) |  | 8.45d → 2.45d |
| TAEXCCCU060004 | Pole Installation with IP Outdoor CCTV POE Camera | 2027-07-21 → 2027-07-28 (+7d) | 2027-08-02 → 2027-08-09 (+7d) |  | 8.45d → 2.45d |
| 7 | **Upgrade Local 07** |  | 2027-08-31 → 2027-09-04 (+4d) |  |  |
| 23 | **Electrical Works** |  | 2027-08-31 → 2027-09-04 (+4d) |  |  |
| TAEXELCU070003 | Road Crossing Ducts |  | 2027-08-16 → 2027-08-21 (+5d) |  | -22.22d → -26.81d |
| TAEXELCU070002 | Drawpit and PVC Pipes Installation |  | 2027-08-14 → 2027-08-19 (+5d) |  | -22.22d → -26.81d |
| TAEXELCU070001 | Trench Cut off | 2027-08-02 → 2027-08-08 (+6d) | 2027-08-10 → 2027-08-16 (+6d) |  | -24.71d → -29.3d |
| TAEXELCU070006 | Poles RC Foundation | 2027-08-14 → 2027-08-19 (+5d) | 2027-08-17 → 2027-08-23 (+6d) |  | -18.51d → -23.1d |
| TAEXELCU070004 | Trench Backfilling | 2027-08-16 → 2027-08-21 (+5d) | 2027-08-25 → 2027-08-30 (+5d) |  | -22.22d → -26.81d |
| TAEXELCU070008 | Lighting Pole Installation with Luminares | 2027-08-17 → 2027-08-23 (+6d) | 2027-08-23 → 2027-08-29 (+6d) |  | -18.51d → -23.1d |
| TAEXELCU070005 | Cables Pulling | 2027-08-25 → 2027-08-30 (+5d) | 2027-08-29 → 2027-09-02 (+4d) |  | -22.22d → -26.81d |
| TAEXELCU070007 | Earthing cables | 2027-08-29 → 2027-09-02 (+4d) | 2027-08-31 → 2027-09-04 (+4d) |  | -22.22d → -26.81d |
| 24 | **CCTV Works** | 2027-06-29 → 2027-07-06 (+7d) | 2027-08-11 → 2027-08-18 (+7d) |  |  |
| TAEXCCCU070001 | Pipe Installation with manhole | 2027-06-29 → 2027-07-06 (+7d) | 2027-07-08 → 2027-07-15 (+7d) |  | -3.55d → -9.55d |
| TAEXCCCU070002 | CCTV Swiches Lighting panels Installation | 2027-07-08 → 2027-07-15 (+7d) | 2027-07-20 → 2027-07-27 (+7d) |  | 0.45d → -5.55d |
| TAEXCCCU070003 | Cable laying and connected with Panels | 2027-07-20 → 2027-07-27 (+7d) | 2027-07-31 → 2027-08-07 (+7d) |  | 0.45d → -5.55d |
| TAEXCCCU070004 | Pole Installation with IP Outdoor CCTV POE Camera | 2027-07-31 → 2027-08-07 (+7d) | 2027-08-11 → 2027-08-18 (+7d) |  | 0.45d → -5.55d |
| 8 | **Upgrade Local 08** |  | 2027-09-02 → 2027-09-06 (+4d) |  |  |
| 24 | **Electrical Works** |  | 2027-09-02 → 2027-09-06 (+4d) |  |  |

| ID | Task | Start | Finish | Complete | Total float |
| --- | --- | --- | --- | --- | --- |
| TAEXELCU080001 | Trench Cut off |  | 2027-08-11 → 2027-08-17 (+6d) |  | -24.71d → -29.3d |
| TAEXELCU080002 | Drawpit and PVC Pipes Installation |  | 2027-08-15 → 2026-10-18 A (-301d) | 50% → 100% | -20.71d → none |
| TAEXELCU080003 | Road Crossing Ducts |  | 2027-08-16 → 2026-10-18 A (-302d) | 50% → 100% | -20.71d → none |
| TAEXELCU080006 | Poles RC Foundation | 2027-08-15 → 2027-08-19 (+4d) | 2027-08-18 → 2027-08-23 (+5d) |  | -19.21d → -23.8d |
| TAEXELCU080004 | Trench Backfilling | 2027-08-16 → 2027-08-22 (+6d) | 2027-08-25 → 2027-08-31 (+6d) |  | -20.71d → -25.3d |
| TAEXELCU080008 | Lighting Pole Installation with Luminares | 2027-08-18 → 2027-08-23 (+5d) | 2027-08-24 → 2027-08-29 (+5d) |  | -19.21d → -23.8d |
| TAEXELCU080005 | Cables Pulling | 2027-08-25 → 2027-08-31 (+6d) | 2027-08-29 → 2027-09-03 (+5d) |  | -20.71d → -25.3d |
| TAEXELCU080007 | Earthing cables | 2027-08-31 → 2027-09-04 (+4d) | 2027-09-02 → 2027-09-06 (+4d) |  | -22.22d → -26.81d |
| 25 | **CCTV Works** | 2027-06-29 → 2027-07-06 (+7d) | 2027-08-11 → 2027-08-18 (+7d) |  |  |
| TAEXCCCU080001 | Pipe Installation with manhole | 2027-06-29 → 2027-07-06 (+7d) | 2027-07-08 → 2027-07-15 (+7d) |  | -3.55d → -9.55d |
| TAEXCCCU080002 | CCTV Swiches Lighting panels Installation | 2027-07-08 → 2027-07-15 (+7d) | 2027-07-20 → 2027-07-27 (+7d) |  | 0.45d → -5.55d |
| TAEXCCCU080003 | Cable laying and connected with Panels | 2027-07-20 → 2027-07-27 (+7d) | 2027-07-31 → 2027-08-07 (+7d) |  | 0.45d → -5.55d |
| TAEXCCCU080004 | Pole Installation with IP Outdoor CCTV POE Camera | 2027-07-31 → 2027-08-07 (+7d) | 2027-08-11 → 2027-08-18 (+7d) |  | 0.45d → -5.55d |
| 9 | **Upgrade Local 09** |  | 2027-09-04 → 2027-09-08 (+4d) |  |  |
| 26 | **Electrical Works** |  | 2027-09-04 → 2027-09-08 (+4d) |  |  |
| TAEXELCU090001 | Trench Cut off | 2027-08-11 → 2027-08-17 (+6d) | 2027-08-19 → 2027-08-25 (+6d) |  | -24.71d → -29.3d |
| TAEXELCU090004 | Trench Backfilling | 2027-08-19 → 2027-08-25 (+6d) | 2027-08-29 → 2027-09-03 (+5d) |  | -21.71d → -26.3d |
| TAEXELCU090006 | Poles RC Foundation | 2027-08-19 → 2027-08-25 (+6d) | 2027-08-24 → 2027-08-30 (+6d) |  | -24.71d → -29.3d |
| TAEXELCU090008 | Lighting Pole Installation with Luminares | 2027-08-24 → 2027-08-30 (+6d) | 2027-08-30 → 2027-09-04 (+5d) |  | -24.71d → -29.3d |
| TAEXELCU090005 | Cables Pulling | 2027-08-29 → 2027-09-03 (+5d) | 2027-09-01 → 2027-09-06 (+5d) |  | -21.71d → -26.3d |
| TAEXELCU090007 | Earthing cables | 2027-09-02 → 2027-09-06 (+4d) | 2027-09-04 → 2027-09-08 (+4d) |  | -22.22d → -26.81d |
| 1 | **CCTV Works** | 2027-07-08 → 2027-07-15 (+7d) | 2027-08-21 → 2027-08-28 (+7d) |  |  |
| TAEXCCCU090001 | Pipe Installation with manhole | 2027-07-08 → 2027-07-15 (+7d) | 2027-07-17 → 2027-07-24 (+7d) |  | -3.55d → -9.55d |
| TAEXCCCU090002 | CCTV Swiches Lighting panels Installation | 2027-07-17 → 2027-07-24 (+7d) | 2027-07-28 → 2027-08-04 (+7d) |  | -3.55d → -9.55d |
| TAEXCCCU090003 | Cable laying and connected with Panels | 2027-07-28 → 2027-08-04 (+7d) | 2027-08-09 → 2027-08-16 (+7d) |  | -3.55d → -9.55d |
| TAEXCCCU090004 | Pole Installation with IP Outdoor CCTV POE Camera | 2027-08-09 → 2027-08-16 (+7d) | 2027-08-21 → 2027-08-28 (+7d) |  | -3.55d → -9.55d |
| 10 | **Upgrade Local 12** |  | 2027-09-08 → 2027-09-13 (+5d) |  |  |
| 18 | **Road works** | 2027-03-21 → 2027-03-24 (+3d) | 2027-06-27 → 2027-06-30 (+3d) |  |  |
| TAEXRDCU120002 | Precast Concret Kerps | 2027-03-21 → 2027-03-24 (+3d) | 2027-04-11 → 2027-04-14 (+3d) |  | 31.21d → 28.96d |
| TAEXRDCU120001 | BWC Asphalt Wearing Course with RC | 2027-05-27 → 2027-05-31 (+4d) | 2027-05-29 → 2027-06-01 (+3d) |  | 31.21d → 28.96d |
| TAEXRDCU120003 | Precast Interlock Works | 2027-05-29 → 2027-06-01 (+3d) | 2027-06-16 → 2027-06-20 (+4d) |  | 31.21d → 28.96d |
| TAEXRDCU120004 | Stone Paving works | 2027-06-16 → 2027-06-20 (+4d) | 2027-06-22 → 2027-06-26 (+4d) |  | 31.21d → 28.96d |
| TAEXRDCU120005 | Road Marking | 2027-06-22 → 2027-06-26 (+4d) | 2027-06-23 → 2027-06-27 (+4d) |  | 31.21d → 28.96d |
| TAEXRDCU120006 | Traffic Sinage | 2027-06-23 → 2027-06-27 (+4d) | 2027-06-27 → 2027-06-30 (+3d) |  | 31.21d → 28.96d |
| 19 | **Electrical Works** |  | 2027-09-08 → 2027-09-13 (+5d) |  |  |
| TAEXELCU120001 | Trench Cut off |  | 2027-04-28 → 2027-05-04 (+6d) | 40% → 49% | -24.71d → -29.3d |
| TAEXELCU120002 | Drawpit and PVC Pipes Installation |  | 2027-05-01 → 2027-05-06 (+5d) |  | 62.55d → 57.96d |
| TAEXELCU120003 | Road Crossing Ducts |  | 2027-05-02 → 2027-05-06 (+4d) |  | 68.31d → 63.72d |
| TAEXELCU120005 | Cables Pulling |  | 2027-06-12 → 2027-06-17 (+5d) |  | 50.52d → 45.93d |
| TAEXELCU120004 | Trench Backfilling |  | 2027-06-05 → 2027-06-10 (+5d) |  | 50.52d → 45.93d |
| TAEXELCU120006 | Poles RC Foundation | 2027-05-01 → 2027-05-06 (+5d) | 2027-05-09 → 2027-05-15 (+6d) |  | 62.55d → 57.96d |
| TAEXELCU120008 | Lighting Pole Installation with Luminares | 2027-05-09 → 2027-05-15 (+6d) | 2027-05-20 → 2027-05-26 (+6d) |  | 62.55d → 57.96d |
| TAEXELCU120007 | Earthing cables | 2027-09-04 → 2027-09-08 (+4d) | 2027-09-08 → 2027-09-13 (+5d) |  | -22.22d → -26.81d |
| 1 | **Telecommunication Works** | 2027-04-18 → 2027-04-25 (+7d) | 2027-08-01 → 2027-08-08 (+7d) |  |  |
| TAEXTCCU120001 | Trench Cut off | 2027-04-18 → 2027-04-25 (+7d) | 2027-05-05 → 2027-05-12 (+7d) |  | -11.61d → -17.61d |
| TAEXTCCU120002 | Drawpit and PVC Pipes Installation | 2027-06-27 → 2027-07-04 (+7d) | 2027-07-07 → 2027-07-14 (+7d) |  | -14.27d → -20.27d |
| TAEXTCCU120003 | Road Crossing Ducts | 2027-07-07 → 2027-07-14 (+7d) | 2027-07-12 → 2027-07-19 (+7d) |  | -0.27d → -6.27d |
| TAEXTCCU120004 | Trench Backfilling | 2027-07-12 → 2027-07-19 (+7d) | 2027-08-01 → 2027-08-08 (+7d) |  | -0.27d → -6.27d |
| 15 | **CCTV Works** | 2027-04-04 → 2027-04-11 (+7d) | 2027-05-30 → 2027-06-06 (+7d) |  |  |
| TAEXCCCU120001 | Pipe Installation with manhole | 2027-04-04 → 2027-04-11 (+7d) | 2027-04-17 → 2027-04-24 (+7d) |  | -8.55d → -14.55d |
| TAEXCCCU120002 | CCTV Swiches Lighting panels Installation | 2027-04-17 → 2027-04-24 (+7d) | 2027-05-01 → 2027-05-08 (+7d) |  | 63.45d → 57.45d |
| TAEXCCCU120003 | Cable laying and connected with Panels | 2027-05-01 → 2027-05-08 (+7d) | 2027-05-13 → 2027-05-20 (+7d) |  | 63.45d → 57.45d |
| TAEXCCCU120004 | Pole Installation with IP Outdoor CCTV POE Camera | 2027-05-13 → 2027-05-20 (+7d) | 2027-05-30 → 2027-06-06 (+7d) |  | 63.45d → 57.45d |
| 2 | **Potable Networks** | 2026-11-07 → 2026-11-14 (+7d) | 2027-03-14 → 2027-03-21 (+7d) |  |  |
| TAEXPTCU120001 | Excavation works for Trench | 2026-11-07 → 2026-11-14 (+7d) | 2026-11-21 → 2026-11-28 (+7d) |  | 68.04d → 62.04d |
| TAEXPTCU120002 | Bedding Works | 2026-11-21 → 2026-11-28 (+7d) | 2026-11-23 → 2026-11-30 (+7d) |  | 107.04d → 101.04d |
| TAEXPTCU120003 | Install Pipes & Fittings | 2026-12-29 → 2027-01-05 (+7d) | 2027-01-07 → 2027-01-14 (+7d) |  | 76.04d → 70.04d |
| TAEXPTCU120004 | Backfilling Works for Trench | 2027-01-07 → 2027-01-14 (+7d) | 2027-01-28 → 2027-02-04 (+7d) |  | 76.04d → 70.04d |
| TAEXPTCU120005 | Install Valves with fittings | 2027-01-24 → 2027-01-31 (+7d) | 2027-01-28 → 2027-02-04 (+7d) |  | 76.04d → 70.04d |
| TAEXPTCU120006 | Install fire hydrent | 2027-01-28 → 2027-02-04 (+7d) | 2027-02-08 → 2027-02-15 (+7d) |  | 76.04d → 70.04d |
| TAEXPTCU120007 | Valve Chamber works | 2027-02-17 → 2027-02-24 (+7d) | 2027-03-08 → 2027-03-15 (+7d) |  | 68.04d → 62.04d |
| TAEXPTCU120008 | Inspection Test | 2027-03-08 → 2027-03-15 (+7d) | 2027-03-14 → 2027-03-21 (+7d) |  | 123.14d → 117.14d |
| 3 | **TSE Networks** |  | 2027-05-30 → 2027-06-06 (+7d) |  |  |
| TAEXTSCU120005 | Install Valves with fittings |  | 2027-05-09 → 2027-05-16 (+7d) |  | 57.42d → 51.42d |
| TAEXTSCU120006 | Valve Chamber works |  | 2027-05-24 → 2027-05-31 (+7d) |  | 57.42d → 51.42d |
| TAEXTSCU120001 | Excavation works for Trench | 2027-01-12 → 2027-01-19 (+7d) | 2027-02-07 → 2027-02-14 (+7d) |  | 57.42d → 51.42d |
| TAEXTSCU120002 | Bedding Works | 2027-02-07 → 2027-02-14 (+7d) | 2027-02-09 → 2027-02-16 (+7d) |  | 107.42d → 101.42d |
| TAEXTSCU120003 | Install Pipes & Fittings | 2027-04-08 → 2027-04-15 (+7d) | 2027-04-18 → 2027-04-25 (+7d) |  | 57.42d → 51.42d |
| TAEXTSCU120004 | Backfilling Works for Trench | 2027-04-18 → 2027-04-25 (+7d) | 2027-05-09 → 2027-05-16 (+7d) |  | 57.42d → 51.42d |
| TAEXTSCU120007 | Inspection Test | 2027-05-24 → 2027-05-31 (+7d) | 2027-05-30 → 2027-06-06 (+7d) |  | 57.42d → 51.42d |

| ID | Task | Start | Finish | Complete | Total float |
| --- | --- | --- | --- | --- | --- |
| 12 | **Sewerage Networks** | 2026-11-10 → 2026-11-11 (+1d) | 2027-01-23 → 2027-01-24 (+1d) |  |  |
| TAEXSWCU120001 | Excavation works for Trench | 2026-11-10 → 2026-11-11 (+1d) | 2026-11-29 → 2026-11-30 (+1d) |  | 131.47d → 131.68d |
| TAEXSWCU120002 | Bedding Works | 2026-11-29 → 2026-11-30 (+1d) | 2026-12-03 → 2026-12-05 (+2d) |  | 161.88d → 160.68d |
| TAEXSWCU120003 | Install GRP Pipes & Fittings | 2026-12-03 → 2026-12-05 (+2d) | 2026-12-20 → 2026-12-21 (+1d) |  | 161.88d → 160.68d |
| TAEXSWCU120004 | Backfilling Works for Trench | 2026-12-22 → 2026-12-23 (+1d) | 2027-01-06 → 2027-01-07 (+1d) |  | 161.88d → 160.68d |
| TAEXSWCU120005 | Manhole Installation with backfilling | 2027-01-04 → 2027-01-05 (+1d) | 2027-01-18 → 2027-01-19 (+1d) |  | 161.88d → 160.68d |
| TAEXSWCU120006 | Leakage Test | 2027-01-18 → 2027-01-19 (+1d) | 2027-01-23 → 2027-01-24 (+1d) |  | 161.88d → 160.68d |
| 4 | **Storm Networks** | 2027-05-19 → 2027-05-26 (+7d) | 2027-08-05 → 2027-08-12 (+7d) |  |  |
| TAEXSTCU120001 | Excavation works for Trench | 2027-05-19 → 2027-05-26 (+7d) | 2027-06-09 → 2027-06-16 (+7d) |  | 6.64d → 0.97d |
| TAEXSTCU120002 | Bedding Works | 2027-06-09 → 2027-06-16 (+7d) | 2027-06-14 → 2027-06-21 (+7d) |  | 6.64d → 0.97d |
| TAEXSTCU120003 | Install GRP Pipes & Fittings | 2027-06-14 → 2027-06-21 (+7d) | 2027-06-30 → 2027-07-07 (+7d) |  | 6.64d → 0.97d |
| TAEXSTCU120004 | Backfilling Works for Trench | 2027-07-03 → 2027-07-10 (+7d) | 2027-07-18 → 2027-07-25 (+7d) |  | 6.64d → 0.97d |
| TAEXSTCU120005 | Manhole Installation with backfilling | 2027-07-04 → 2027-07-11 (+7d) | 2027-07-18 → 2027-07-25 (+7d) |  | 6.64d → 0.97d |
| TAEXSTCU120006 | Install Catch Basin with UPVC Pipes & Fittings | 2027-07-18 → 2027-07-25 (+7d) | 2027-08-01 → 2027-08-08 (+7d) |  | 6.64d → 0.97d |
| TAEXSTCU120007 | Leakage Test | 2027-08-01 → 2027-08-08 (+7d) | 2027-08-05 → 2027-08-12 (+7d) |  | 6.64d → 0.97d |
| 11 | **Upgrade Local 14** |  | 2027-09-11 → 2027-09-15 (+4d) |  |  |
| 21 | **Electrical Works** |  | 2027-09-11 → 2027-09-15 (+4d) |  |  |
| TAEXELCU140001 | Trench Cut off |  | 2027-07-21 → 2027-07-27 (+6d) |  | -24.71d → -29.3d |
| TAEXELCU140005 | Cables Pulling |  | 2027-08-16 → 2027-08-22 (+6d) |  | -1.5d → -6.09d |
| TAEXELCU140002 | Drawpit and PVC Pipes Installation | 2027-07-21 → 2027-07-27 (+6d) | 2027-07-28 → 2027-08-03 (+6d) |  | -6.66d → -11.25d |
| TAEXELCU140003 | Road Crossing Ducts | 2027-07-28 → 2027-08-03 (+6d) | 2027-08-01 → 2027-08-07 (+6d) |  | -1.5d → -6.09d |
| TAEXELCU140006 | Poles RC Foundation | 2027-07-28 → 2027-08-03 (+6d) | 2027-08-02 → 2027-08-08 (+6d) |  | -6.66d → -11.25d |
| TAEXELCU140004 | Trench Backfilling | 2027-08-01 → 2027-08-07 (+6d) | 2027-08-12 → 2027-08-18 (+6d) |  | -1.5d → -6.09d |
| TAEXELCU140008 | Lighting Pole Installation with Luminares | 2027-08-02 → 2027-08-08 (+6d) | 2027-08-09 → 2027-08-15 (+6d) |  | -6.66d → -11.25d |
| TAEXELCU140007 | Earthing cables | 2027-09-08 → 2027-09-13 (+5d) | 2027-09-11 → 2027-09-15 (+4d) |  | -22.22d → -26.81d |
| 22 | **CCTV Works** | 2027-06-20 → 2027-06-27 (+7d) | 2027-08-02 → 2027-08-09 (+7d) |  |  |
| TAEXCCCU140001 | Pipe Installation with manhole | 2027-06-20 → 2027-06-27 (+7d) | 2027-06-28 → 2027-07-05 (+7d) |  | -8.55d → -14.55d |
| TAEXCCCU140002 | CCTV Swiches Lighting panels Installation | 2027-06-28 → 2027-07-05 (+7d) | 2027-07-12 → 2027-07-19 (+7d) |  | -8.55d → -14.55d |
| TAEXCCCU140003 | Cable laying and connected with Panels | 2027-07-12 → 2027-07-19 (+7d) | 2027-07-21 → 2027-07-28 (+7d) |  | 8.45d → 2.45d |
| TAEXCCCU140004 | Pole Installation with IP Outdoor CCTV POE Camera | 2027-07-21 → 2027-07-28 (+7d) | 2027-08-02 → 2027-08-09 (+7d) |  | 8.45d → 2.45d |
| 12 | **Upgrade Local 18** | 2027-07-08 → 2027-07-15 (+7d) | 2027-08-11 → 2027-08-18 (+7d) |  |  |
| 27 | **CCTV Works** | 2027-07-08 → 2027-07-15 (+7d) | 2027-08-11 → 2027-08-18 (+7d) |  |  |
| TAEXCCCU180001 | Pipe Installation with manhole | 2027-07-08 → 2027-07-15 (+7d) | 2027-07-18 → 2027-07-25 (+7d) |  | 0.45d → -5.55d |
| TAEXCCCU180002 | CCTV Swiches Lighting panels Installation | 2027-07-18 → 2027-07-25 (+7d) | 2027-07-28 → 2027-08-04 (+7d) |  | 0.45d → -5.55d |
| TAEXCCCU180003 | Cable laying and connected with Panels | 2027-07-28 → 2027-08-04 (+7d) | 2027-08-05 → 2027-08-12 (+7d) |  | 0.45d → -5.55d |
| TAEXCCCU180004 | Pole Installation with IP Outdoor CCTV POE Camera | 2027-08-05 → 2027-08-12 (+7d) | 2027-08-11 → 2027-08-18 (+7d) |  | 0.45d → -5.55d |
| 13 | **Upgrade Local 20** |  | 2027-09-15 → 2027-09-20 (+5d) |  |  |
| 16 | **Electrical Works** |  | 2027-09-15 → 2027-09-20 (+5d) |  |  |
| TAEXELCU200001 | Trench Cut off |  | 2027-03-25 → 2027-04-01 (+7d) | 47% → 50% | -24.71d → -29.3d |
| TAEXELCU200005 | Cables Pulling |  | 2027-05-02 → 2027-05-09 (+7d) |  | 76.26d → 70.26d |
| TAEXELCU200004 | Trench Backfilling |  | 2027-05-01 → 2027-05-08 (+7d) |  | 76.26d → 70.26d |
| TAEXELCU200002 | Drawpit and PVC Pipes Installation |  | 2027-04-17 → 2027-04-24 (+7d) |  | 75.22d → 69.22d |
| TAEXELCU200003 | Road Crossing Ducts |  | 2027-04-21 → 2027-04-28 (+7d) |  | 76.26d → 70.26d |
| TAEXELCU200006 | Poles RC Foundation | 2027-04-17 → 2027-04-24 (+7d) | 2027-04-25 → 2027-05-02 (+7d) |  | 75.22d → 69.22d |
| TAEXELCU200008 | Lighting Pole Installation with Luminares | 2027-04-25 → 2027-05-02 (+7d) | 2027-05-05 → 2027-05-12 (+7d) |  | 75.22d → 69.22d |
| TAEXELCU200009 | Install Substation & RMU | 2027-05-02 → 2027-05-09 (+7d) | 2027-05-12 → 2027-05-19 (+7d) |  | 76.26d → 70.26d |
| TAEXELCU200007 | Earthing cables | 2027-09-11 → 2027-09-15 (+4d) | 2027-09-15 → 2027-09-20 (+5d) |  | -22.22d → -26.81d |
| 14 | **CCTV Works** | 2027-03-02 → 2027-03-09 (+7d) | 2027-08-22 → 2027-08-29 (+7d) |  |  |
| TAEXCCCU200001 | Pipe Installation with manhole | 2027-03-02 → 2027-03-09 (+7d) | 2027-03-14 → 2027-03-21 (+7d) |  | -8.55d → -14.55d |
| TAEXCCCU200002 | CCTV Swiches Lighting panels Installation | 2027-07-12 → 2027-07-19 (+7d) | 2027-07-27 → 2027-08-03 (+7d) |  | -8.55d → -14.55d |
| TAEXCCCU200003 | Cable laying and connected with Panels | 2027-07-27 → 2027-08-03 (+7d) | 2027-08-08 → 2027-08-15 (+7d) |  | -8.55d → -14.55d |
| TAEXCCCU200004 | Pole Installation with IP Outdoor CCTV POE Camera | 2027-08-08 → 2027-08-15 (+7d) | 2027-08-22 → 2027-08-29 (+7d) |  | -8.55d → -14.55d |
| 1 | **Potable Networks** | 2026-10-12 → 2026-10-19 (+7d) | 2027-01-07 → 2027-01-14 (+7d) |  |  |
| TAEXPTCU200007 | Valve Chamber works | 2026-10-12 → 2026-10-19 (+7d) | 2026-10-31 → 2026-11-07 (+7d) |  | 123.9d → 117.9d |
| TAEXPTCU200008 | Inspection Test | 2026-11-01 → 2026-11-08 (+7d) | 2026-11-05 → 2026-11-12 (+7d) |  | 233d → 227d |
| TAEXPTCU200001 | Excavation works for Trench | 2026-11-21 → 2026-11-28 (+7d) | 2026-12-01 → 2026-12-08 (+7d) |  | 68.04d → 62.04d |
| TAEXPTCU200002 | Bedding Works | 2026-12-01 → 2026-12-08 (+7d) | 2026-12-03 → 2026-12-10 (+7d) |  | 69.04d → 63.04d |
| TAEXPTCU200003 | Install Pipes & Fittings | 2026-12-03 → 2026-12-10 (+7d) | 2026-12-13 → 2026-12-20 (+7d) |  | 69.04d → 63.04d |
| TAEXPTCU200004 | Backfilling Works for Trench | 2026-12-13 → 2026-12-20 (+7d) | 2026-12-31 → 2027-01-07 (+7d) |  | 174.14d → 168.14d |
| TAEXPTCU200005 | Install Valves with fittings | 2026-12-27 → 2027-01-03 (+7d) | 2026-12-31 → 2027-01-07 (+7d) |  | 174.14d → 168.14d |
| TAEXPTCU200006 | Install fire hydrent | 2026-12-31 → 2027-01-07 (+7d) | 2027-01-07 → 2027-01-14 (+7d) |  | 174.14d → 168.14d |
| 2 | **TSE Networks** | 2027-02-07 → 2027-02-14 (+7d) | 2027-04-27 → 2027-05-04 (+7d) |  |  |
| TAEXTSCU200001 | Excavation works for Trench | 2027-02-07 → 2027-02-14 (+7d) | 2027-03-02 → 2027-03-09 (+7d) |  | 57.42d → 51.42d |
| TAEXTSCU200002 | Bedding Works | 2027-03-02 → 2027-03-09 (+7d) | 2027-03-04 → 2027-03-11 (+7d) |  | 74.42d → 68.42d |
| TAEXTSCU200003 | Install Pipes & Fittings | 2027-03-04 → 2027-03-11 (+7d) | 2027-03-14 → 2027-03-21 (+7d) |  | 74.42d → 68.42d |
| TAEXTSCU200004 | Backfilling Works for Trench | 2027-03-14 → 2027-03-21 (+7d) | 2027-04-01 → 2027-04-08 (+7d) |  | 85.92d → 79.92d |
| TAEXTSCU200005 | Install Valves with fittings | 2027-03-28 → 2027-04-04 (+7d) | 2027-04-01 → 2027-04-08 (+7d) |  | 85.92d → 79.92d |
| TAEXTSCU200006 | Valve Chamber works | 2027-04-01 → 2027-04-08 (+7d) | 2027-04-21 → 2027-04-28 (+7d) |  | 85.92d → 79.92d |
| TAEXTSCU200007 | Inspection Test | 2027-04-21 → 2027-04-28 (+7d) | 2027-04-27 → 2027-05-04 (+7d) |  | 85.92d → 79.92d |
| 3 | **Sewerage Networks** | 2026-11-29 → 2026-11-30 (+1d) | 2027-02-06 → 2027-02-07 (+1d) |  |  |

| ID | Task | Start | Finish | Total float |
| --- | --- | --- | --- | --- |
| TAEXSWCU200001 | Excavation works for Trench | 2026-11-29 → 2026-11-30 (+1d) | 2026-12-16 → 2026-12-17 (+1d) | 131.47d → 131.68d |
| TAEXSWCU200002 | Bedding Works | 2026-12-16 → 2026-12-17 (+1d) | 2026-12-20 → 2026-12-21 (+1d) | 149.88d → 148.68d |
| TAEXSWCU200003 | Install GRP Pipes & Fittings | 2026-12-20 → 2026-12-21 (+1d) | 2027-01-03 → 2027-01-04 (+1d) | 149.88d → 148.68d |
| TAEXSWCU200004 | Backfilling Works for Trench | 2026-12-31 → 2027-01-02 (+2d) | 2027-01-20 → 2027-01-21 (+1d) | 149.88d → 148.68d |
| TAEXSWCU200005 | Manhole Installation with backfilling | 2027-01-13 → 2027-01-14 (+1d) | 2027-02-01 → 2027-02-02 (+1d) | 149.88d → 148.68d |
| TAEXSWCU200006 | Leakage Test | 2027-02-01 → 2027-02-02 (+1d) | 2027-02-06 → 2027-02-07 (+1d) | 149.88d → 148.68d |
| 14 | **Upgrade Local 29** |  | 2027-09-18 → 2027-09-22 (+4d) |  |
| 25 | **Road Works** |  | 2027-05-18 → 2027-05-22 (+4d) |  |
| TAEXRDCU290002 | MBC1 layer | 2027-03-03 → 2027-03-07 (+4d) | 2027-03-04 → 2027-03-08 (+4d) | 31.21d → 28.96d |
| TAEXRDCU290003 | BBC Base Course | 2027-03-04 → 2027-03-08 (+4d) | 2027-03-09 → 2027-03-13 (+4d) | 31.21d → 28.96d |
| TAEXRDCU290005 | Precast Concret Kerps | 2027-03-09 → 2027-03-13 (+4d) | 2027-03-21 → 2027-03-24 (+3d) | 31.21d → 28.96d |
| TAEXRDCU290004 | BWC Asphalt Wearing Course with RC | 2027-03-21 → 2027-03-24 (+3d) | 2027-03-24 → 2027-03-28 (+4d) | 65.21d → 62.96d |
| TAEXRDCU290006 | Precast Interlock Works | 2027-05-04 → 2027-05-08 (+4d) | 2027-05-13 → 2027-05-17 (+4d) | 65.21d → 62.96d |
| TAEXRDCU290007 | Stone Paving works | 2027-05-13 → 2027-05-17 (+4d) | 2027-05-16 → 2027-05-19 (+3d) | 65.21d → 62.96d |
| TAEXRDCU290008 | Road Marking | 2027-05-16 → 2027-05-19 (+3d) | 2027-05-17 → 2027-05-20 (+3d) | 65.21d → 62.96d |
| TAEXRDCU290009 | Traffic Sinage | 2027-05-17 → 2027-05-20 (+3d) | 2027-05-18 → 2027-05-22 (+4d) | 65.21d → 62.96d |
| 20 | **Electrical Works** | 2027-07-01 → 2027-07-07 (+6d) | 2027-09-18 → 2027-09-22 (+4d) |  |
| TAEXELCU290001 | Trench Cut off | 2027-07-01 → 2027-07-07 (+6d) | 2027-07-13 → 2027-07-19 (+6d) | -24.71d → -29.3d |
| TAEXELCU290002 | Drawpit and PVC Pipes Installation | 2027-07-13 → 2027-07-19 (+6d) | 2027-07-20 → 2027-07-26 (+6d) | 0.44d → -4.15d |
| TAEXELCU290003 | Road Crossing Ducts | 2027-07-20 → 2027-07-26 (+6d) | 2027-07-24 → 2027-07-29 (+5d) | 10.44d → 5.85d |
| TAEXELCU290006 | Poles RC Foundation | 2027-07-20 → 2027-07-26 (+6d) | 2027-07-25 → 2027-07-31 (+6d) | 0.44d → -4.15d |
| TAEXELCU290004 | Trench Backfilling | 2027-07-24 → 2027-07-29 (+5d) | 2027-08-04 → 2027-08-10 (+6d) | 10.44d → 5.85d |
| TAEXELCU290008 | Lighting Pole Installation with Luminares | 2027-07-25 → 2027-07-31 (+6d) | 2027-08-01 → 2027-08-07 (+6d) | 0.44d → -4.15d |
| TAEXELCU290005 | Cables Pulling | 2027-08-04 → 2027-08-10 (+6d) | 2027-08-09 → 2027-08-15 (+6d) | 10.44d → 5.85d |
| TAEXELCU290007 | Earthing cables | 2027-09-15 → 2027-09-20 (+5d) | 2027-09-18 → 2027-09-22 (+4d) | -22.22d → -26.81d |
| 1 | **Telecommunication Works** | 2027-06-19 → 2027-06-26 (+7d) | 2027-07-29 → 2027-08-05 (+7d) |  |
| TAEXTCCU290001 | Trench Cut off | 2027-06-19 → 2027-06-26 (+7d) | 2027-06-30 → 2027-07-07 (+7d) | -8.61d → -14.61d |
| TAEXTCCU290002 | Drawpit and PVC Pipes Installation | 2027-07-07 → 2027-07-14 (+7d) | 2027-07-14 → 2027-07-21 (+7d) | -14.27d → -20.27d |
| TAEXTCCU290003 | Road Crossing Ducts | 2027-07-14 → 2027-07-21 (+7d) | 2027-07-18 → 2027-07-25 (+7d) | 1.73d → -4.27d |
| TAEXTCCU290004 | Trench Backfilling | 2027-07-18 → 2027-07-25 (+7d) | 2027-07-29 → 2027-08-05 (+7d) | 1.73d → -4.27d |
| 21 | **CCTV Works** | 2027-06-12 → 2027-06-19 (+7d) | 2027-07-24 → 2027-07-31 (+7d) |  |
| TAEXCCCU290001 | Pipe Installation with manhole | 2027-06-12 → 2027-06-19 (+7d) | 2027-06-20 → 2027-06-27 (+7d) | -8.55d → -14.55d |
| TAEXCCCU290002 | CCTV Swiches Lighting panels Installation | 2027-06-20 → 2027-06-27 (+7d) | 2027-07-01 → 2027-07-08 (+7d) | 6.45d → 0.45d |
| TAEXCCCU290003 | Cable laying and connected with Panels | 2027-07-01 → 2027-07-08 (+7d) | 2027-07-12 → 2027-07-19 (+7d) | 16.45d → 10.45d |
| TAEXCCCU290004 | Pole Installation with IP Outdoor CCTV POE Camera | 2027-07-12 → 2027-07-19 (+7d) | 2027-07-24 → 2027-07-31 (+7d) | 16.45d → 10.45d |
| 2 | **Potable Networks** |  | 2027-05-29 → 2027-06-05 (+7d) |  |
| TAEXPTCU290007 | Valve Chamber works | 2027-05-11 → 2027-05-18 (+7d) | 2027-05-29 → 2027-06-05 (+7d) | 68.04d → 62.04d |
| 3 | **TSE Networks** |  | 2027-04-18 → 2027-04-25 (+7d) |  |
| TAEXTSCU290006 | Valve Chamber works | 2027-03-31 → 2027-04-07 (+7d) | 2027-04-18 → 2027-04-25 (+7d) | 93.92d → 87.92d |
| 15 | **Upgrade Local 32** |  | 2027-09-22 → 2027-09-27 (+5d) |  |
| 17 | **Electrical Works** | 2027-03-25 → 2027-04-01 (+7d) | 2027-09-22 → 2027-09-27 (+5d) |  |
| TAEXELCU320001 | Trench Cut off | 2027-03-25 → 2027-04-01 (+7d) | 2027-04-07 → 2027-04-14 (+7d) | -24.71d → -29.3d |
| TAEXELCU320002 | Drawpit and PVC Pipes Installation | 2027-04-07 → 2027-04-14 (+7d) | 2027-04-12 → 2027-04-19 (+7d) | 79.05d → 73.05d |
| TAEXELCU320003 | Road Crossing Ducts | 2027-04-12 → 2027-04-19 (+7d) | 2027-04-26 → 2027-05-03 (+7d) | 82.05d → 76.05d |
| TAEXELCU320006 | Poles RC Foundation | 2027-04-12 → 2027-04-19 (+7d) | 2027-04-20 → 2027-04-27 (+7d) | 79.05d → 73.05d |
| TAEXELCU320008 | Lighting Pole Installation with Luminares | 2027-04-20 → 2027-04-27 (+7d) | 2027-05-01 → 2027-05-08 (+7d) | 79.05d → 73.05d |
| TAEXELCU320004 | Trench Backfilling | 2027-04-26 → 2027-05-03 (+7d) | 2027-05-15 → 2027-05-22 (+7d) | 82.05d → 76.05d |
| TAEXELCU320005 | Cables Pulling | 2027-05-15 → 2027-05-22 (+7d) | 2027-05-19 → 2027-05-26 (+7d) | 82.05d → 76.05d |
| TAEXELCU320007 | Earthing cables | 2027-09-18 → 2027-09-22 (+4d) | 2027-09-22 → 2027-09-27 (+5d) | -22.22d → -26.81d |
| 4 | **Telecommunication Works** | 2027-03-14 → 2027-03-21 (+7d) | 2027-08-24 → 2027-08-31 (+7d) |  |
| TAEXCCCU320001 | Pipe Installation with manhole | 2027-03-14 → 2027-03-21 (+7d) | 2027-03-25 → 2027-04-01 (+7d) | -8.55d → -14.55d |
| TAEXCCCU320002 | CCTV Swiches Lighting panels Installation | 2027-07-14 → 2027-07-21 (+7d) | 2027-07-29 → 2027-08-05 (+7d) | -14.27d → -20.27d |
| TAEXCCCU320003 | Cable laying and connected with Panels | 2027-07-29 → 2027-08-05 (+7d) | 2027-08-10 → 2027-08-17 (+7d) | -10.27d → -16.27d |
| TAEXCCCU320004 | Pole Installation with IP Outdoor CCTV POE Camera | 2027-08-10 → 2027-08-17 (+7d) | 2027-08-24 → 2027-08-31 (+7d) | -10.27d → -16.27d |
| 16 | **Potable Networks** | 2026-11-01 → 2026-11-08 (+7d) | 2027-01-18 → 2027-01-25 (+7d) |  |
| TAEXPTCU320007 | Valve Chamber works | 2026-11-01 → 2026-11-08 (+7d) | 2026-11-19 → 2026-11-26 (+7d) | 123.9d → 117.9d |
| TAEXPTCU320008 | Inspection Test | 2026-11-21 → 2026-11-28 (+7d) | 2026-11-25 → 2026-12-02 (+7d) | 211d → 205d |
| TAEXPTCU320001 | Excavation works for Trench | 2026-12-01 → 2026-12-08 (+7d) | 2026-12-12 → 2026-12-19 (+7d) | 68.04d → 62.04d |
| TAEXPTCU320002 | Bedding Works | 2026-12-12 → 2026-12-19 (+7d) | 2026-12-14 → 2026-12-21 (+7d) | 68.04d → 62.04d |
| TAEXPTCU320003 | Install Pipes & Fittings | 2026-12-14 → 2026-12-21 (+7d) | 2026-12-23 → 2026-12-30 (+7d) | 68.04d → 62.04d |
| TAEXPTCU320004 | Backfilling Works for Trench | 2026-12-23 → 2026-12-30 (+7d) | 2027-01-11 → 2027-01-18 (+7d) | 68.04d → 62.04d |
| TAEXPTCU320005 | Install Valves with fittings | 2027-01-06 → 2027-01-13 (+7d) | 2027-01-11 → 2027-01-18 (+7d) | 68.04d → 62.04d |
| TAEXPTCU320006 | Install fire hydrent | 2027-01-11 → 2027-01-18 (+7d) | 2027-01-18 → 2027-01-25 (+7d) | 68.04d → 62.04d |
| 1 | **TSE Networks** |  | 2027-04-27 → 2027-05-04 (+7d) |  |
| TAEXTSCU320005 | Install Valves with fittings |  | 2027-04-01 → 2027-04-08 (+7d) | 85.92d → 79.92d |
| TAEXTSCU320004 | Backfilling Works for Trench | 2027-03-14 → 2027-03-21 (+7d) | 2027-04-01 → 2027-04-08 (+7d) | 85.92d → 79.92d |
| TAEXTSCU320006 | Valve Chamber works | 2027-04-01 → 2027-04-08 (+7d) | 2027-04-21 → 2027-04-28 (+7d) | 85.92d → 79.92d |
| TAEXTSCU320007 | Inspection Test | 2027-04-21 → 2027-04-28 (+7d) | 2027-04-27 → 2027-05-04 (+7d) | 85.92d → 79.92d |
| 3 | **Storm Networks** | 2027-04-07 → 2027-04-14 (+7d) | 2027-06-20 → 2027-06-27 (+7d) |  |
| TAEXSTCU320001 | Excavation works for Trench | 2027-04-07 → 2027-04-14 (+7d) | 2027-04-19 → 2027-04-26 (+7d) | 6.64d → 0.97d |

| ID | Task | Start | Finish | Complete | Total float |
| --- | --- | --- | --- | --- | --- |
| TAEXSTCU320002 | Bedding Works | 2027-04-19 → 2027-04-26 (+7d) | 2027-04-22 → 2027-04-29 (+7d) |  | 24.64d → 18.97d |
| TAEXSTCU320003 | Install GRP Pipes & Fittings | 2027-04-22 → 2027-04-29 (+7d) | 2027-04-29 → 2027-05-06 (+7d) |  | 24.64d → 18.97d |
| TAEXSTCU320004 | Backfilling Works for Trench | 2027-04-27 → 2027-05-04 (+7d) | 2027-05-17 → 2027-05-24 (+7d) |  | 24.64d → 18.97d |
| TAEXSTCU320005 | Manhole Installation with backfilling | 2027-05-10 → 2027-05-17 (+7d) | 2027-05-29 → 2027-06-05 (+7d) |  | 24.64d → 18.97d |
| TAEXSTCU320006 | Install Catch Basin with UPVC Pipes & Fittings | 2027-05-29 → 2027-06-05 (+7d) | 2027-06-15 → 2027-06-22 (+7d) |  | 24.64d → 18.97d |
| TAEXSTCU320007 | Leakage Test | 2027-06-15 → 2027-06-22 (+7d) | 2027-06-20 → 2027-06-27 (+7d) |  | 46.64d → 40.97d |
| 16 | **Upgrade Local 33** |  | 2027-09-25 → 2027-09-29 (+4d) |  |  |
| 27 | **Road Works** | 2027-05-16 → 2027-05-19 (+3d) | 2027-06-12 → 2027-06-15 (+3d) |  |  |
| TAEXRDCU330002 | Precast Concret Kerps | 2027-05-16 → 2027-05-19 (+3d) | 2027-05-27 → 2027-05-31 (+4d) |  | 44.21d → 41.96d |
| TAEXRDCU330001 | BWC Asphalt Wearing Course with RC | 2027-05-27 → 2027-05-31 (+4d) | 2027-05-29 → 2027-06-01 (+3d) |  | 44.21d → 41.96d |
| TAEXRDCU330003 | Precast Interlock Works | 2027-05-29 → 2027-06-01 (+3d) | 2027-06-07 → 2027-06-10 (+3d) |  | 44.21d → 41.96d |
| TAEXRDCU330004 | Stone Paving works | 2027-06-07 → 2027-06-10 (+3d) | 2027-06-09 → 2027-06-13 (+4d) |  | 44.21d → 41.96d |
| TAEXRDCU330005 | Road Marking | 2027-06-09 → 2027-06-13 (+4d) | 2027-06-10 → 2027-06-14 (+4d) |  | 44.21d → 41.96d |
| TAEXRDCU330006 | Traffic Sinage | 2027-06-10 → 2027-06-14 (+4d) | 2027-06-12 → 2027-06-15 (+3d) |  | 44.21d → 41.96d |
| 18 | **Electrical Works** | 2027-04-07 → 2027-04-14 (+7d) | 2027-09-25 → 2027-09-29 (+4d) |  |  |
| TAEXELCU330001 | Trench Cut off | 2027-04-07 → 2027-04-14 (+7d) | 2027-04-20 → 2027-04-27 (+7d) |  | -24.71d → -29.3d |
| TAEXELCU330002 | Drawpit and PVC Pipes Installation | 2027-04-20 → 2027-04-27 (+7d) | 2027-05-01 → 2027-05-08 (+7d) |  | 71.64d → 65.97d |
| TAEXELCU330003 | Road Crossing Ducts | 2027-05-01 → 2027-05-08 (+7d) | 2027-05-12 → 2027-05-19 (+7d) |  | 76.64d → 70.97d |
| TAEXELCU330006 | Poles RC Foundation | 2027-05-01 → 2027-05-08 (+7d) | 2027-05-05 → 2027-05-12 (+7d) |  | 71.64d → 65.97d |
| TAEXELCU330008 | Lighting Pole Installation with Luminares | 2027-05-05 → 2027-05-12 (+7d) | 2027-05-10 → 2027-05-17 (+7d) |  | 71.64d → 65.97d |
| TAEXELCU330004 | Trench Backfilling | 2027-05-12 → 2027-05-19 (+7d) | 2027-05-27 → 2027-06-03 (+7d) |  | 76.64d → 70.97d |
| TAEXELCU330005 | Cables Pulling | 2027-05-27 → 2027-06-03 (+7d) | 2027-05-31 → 2027-06-07 (+7d) |  | 76.64d → 70.97d |
| TAEXELCU330007 | Earthing cables | 2027-09-22 → 2027-09-27 (+5d) | 2027-09-25 → 2027-09-29 (+4d) |  | -22.22d → -26.81d |
| 1 | **Telecommunication Works** | 2027-04-12 → 2027-04-19 (+7d) | 2027-08-17 → 2027-08-24 (+7d) |  |  |
| TAEXTCCU330001 | Trench Cut off | 2027-04-12 → 2027-04-19 (+7d) | 2027-04-18 → 2027-04-25 (+7d) |  | -11.61d → -17.61d |
| TAEXTCCU330002 | Drawpit and PVC Pipes Installation | 2027-07-29 → 2027-08-05 (+7d) | 2027-08-03 → 2027-08-10 (+7d) |  | -14.27d → -20.27d |
| TAEXTCCU330003 | Road Crossing Ducts | 2027-08-03 → 2027-08-10 (+7d) | 2027-08-07 → 2027-08-14 (+7d) |  | -14.27d → -20.27d |
| TAEXTCCU330004 | Trench Backfilling | 2027-08-07 → 2027-08-14 (+7d) | 2027-08-17 → 2027-08-24 (+7d) |  | -14.27d → -20.27d |
| 17 | **CCTV Works** | 2027-03-25 → 2027-04-01 (+7d) | 2027-08-04 → 2027-08-11 (+7d) |  |  |
| TAEXCCCU330001 | Pipe Installation with manhole | 2027-03-25 → 2027-04-01 (+7d) | 2027-04-04 → 2027-04-11 (+7d) |  | -8.55d → -14.55d |
| TAEXCCCU330002 | CCTV Swiches Lighting panels Installation | 2027-07-01 → 2027-07-08 (+7d) | 2027-07-13 → 2027-07-20 (+7d) |  | 6.45d → 0.45d |
| TAEXCCCU330003 | Cable laying and connected with Panels | 2027-07-13 → 2027-07-20 (+7d) | 2027-07-24 → 2027-07-31 (+7d) |  | 6.45d → 0.45d |
| TAEXCCCU330004 | Pole Installation with IP Outdoor CCTV POE Camera | 2027-07-24 → 2027-07-31 (+7d) | 2027-08-04 → 2027-08-11 (+7d) |  | 6.45d → 0.45d |
| 2 | **Potable Networks** | 2026-12-12 → 2026-12-19 (+7d) | 2027-02-21 → 2027-02-28 (+7d) |  |  |
| TAEXPTCU330001 | Excavation works for Trench | 2026-12-12 → 2026-12-19 (+7d) | 2026-12-16 → 2026-12-23 (+7d) |  | 77.04d → 71.04d |
| TAEXPTCU330002 | Bedding Works | 2026-12-16 → 2026-12-23 (+7d) | 2026-12-19 → 2026-12-26 (+7d) |  | 77.04d → 71.04d |
| TAEXPTCU330003 | Install Pipes & Fittings | 2026-12-23 → 2026-12-30 (+7d) | 2026-12-29 → 2027-01-05 (+7d) |  | 73.04d → 67.04d |
| TAEXPTCU330004 | Backfilling Works for Trench | 2026-12-29 → 2027-01-05 (+7d) | 2027-01-12 → 2027-01-19 (+7d) |  | 73.04d → 67.04d |
| TAEXPTCU330005 | Install Valves with fittings | 2027-01-07 → 2027-01-14 (+7d) | 2027-01-12 → 2027-01-19 (+7d) |  | 73.04d → 67.04d |
| TAEXPTCU330006 | Install fire hydrent | 2027-01-18 → 2027-01-25 (+7d) | 2027-01-24 → 2027-01-31 (+7d) |  | 68.04d → 62.04d |
| TAEXPTCU330007 | Valve Chamber works | 2027-01-24 → 2027-01-31 (+7d) | 2027-02-17 → 2027-02-24 (+7d) |  | 68.04d → 62.04d |
| TAEXPTCU330008 | Inspection Test | 2027-02-17 → 2027-02-24 (+7d) | 2027-02-21 → 2027-02-28 (+7d) |  | 141.14d → 135.14d |
| 3 | **TSE Networks** | 2027-03-02 → 2027-03-09 (+7d) | 2027-05-13 → 2027-05-20 (+7d) |  |  |
| TAEXTSCU330001 | Excavation works for Trench | 2027-03-02 → 2027-03-09 (+7d) | 2027-03-31 → 2027-04-07 (+7d) |  | 57.42d → 51.42d |
| TAEXTSCU330002 | Bedding Works | 2027-03-31 → 2027-04-07 (+7d) | 2027-04-03 → 2027-04-10 (+7d) |  | 57.42d → 51.42d |
| TAEXTSCU330003 | Install Pipes & Fittings | 2027-04-03 → 2027-04-10 (+7d) | 2027-04-08 → 2027-04-15 (+7d) |  | 57.42d → 51.42d |
| TAEXTSCU330004 | Backfilling Works for Trench | 2027-04-08 → 2027-04-15 (+7d) | 2027-04-22 → 2027-04-29 (+7d) |  | 71.92d → 65.92d |
| TAEXTSCU330005 | Install Valves with fittings | 2027-04-18 → 2027-04-25 (+7d) | 2027-04-22 → 2027-04-29 (+7d) |  | 71.92d → 65.92d |
| TAEXTSCU330006 | Valve Chamber works | 2027-04-22 → 2027-04-29 (+7d) | 2027-05-10 → 2027-05-17 (+7d) |  | 71.92d → 65.92d |
| TAEXTSCU330007 | Inspection Test | 2027-05-10 → 2027-05-17 (+7d) | 2027-05-13 → 2027-05-20 (+7d) |  | 71.92d → 65.92d |
| TAEXSWCU330001 | Excavation works for Trench |  | 2027-02-09 → 2026-10-17 A (-115d) | 97% → 100% | 131.47d → none |
| TAEXSWCU330002 | Bedding Works |  | 2027-02-09 → 2026-10-18 A (-114d) | 97% → 100% | 131.47d → none |
| TAEXSWCU330003 | Install GRP Pipes & Fittings |  | 2027-02-10 → 2026-10-18 A (-115d) | 85% → 100% | 131.47d → none |
| 5 | **Storm Networks** | 2027-05-01 → 2027-05-08 (+7d) | 2027-07-13 → 2027-07-20 (+7d) |  |  |
| TAEXSTCU330001 | Excavation works for Trench | 2027-05-01 → 2027-05-08 (+7d) | 2027-05-19 → 2027-05-26 (+7d) |  | 6.64d → 0.97d |
| TAEXSTCU330002 | Bedding Works | 2027-05-19 → 2027-05-26 (+7d) | 2027-05-22 → 2027-05-29 (+7d) |  | 13.64d → 7.97d |
| TAEXSTCU330003 | Install GRP Pipes & Fittings | 2027-05-22 → 2027-05-29 (+7d) | 2027-05-30 → 2027-06-06 (+7d) |  | 13.64d → 7.97d |
| TAEXSTCU330004 | Backfilling Works for Trench | 2027-06-02 → 2027-06-09 (+7d) | 2027-06-16 → 2027-06-23 (+7d) |  | 13.64d → 7.97d |
| TAEXSTCU330005 | Manhole Installation with backfilling | 2027-06-15 → 2027-06-22 (+7d) | 2027-06-28 → 2027-07-05 (+7d) |  | 13.64d → 7.97d |
| TAEXSTCU330006 | Install Catch Basin with UPVC Pipes & Fittings | 2027-06-28 → 2027-07-05 (+7d) | 2027-07-10 → 2027-07-17 (+7d) |  | 13.64d → 7.97d |
| TAEXSTCU330007 | Leakage Test | 2027-07-10 → 2027-07-17 (+7d) | 2027-07-13 → 2027-07-20 (+7d) |  | 26.64d → 20.97d |
| 17 | **Pond** |  | 2026-12-22 → 2026-12-29 (+7d) |  |  |
| 21 | **Storm Water Pond** |  | 2026-12-22 → 2026-12-29 (+7d) |  |  |
| TAEXSTCSWP0007 | Excavation works for ponds 7th part |  | 2026-10-27 → 2026-11-03 (+7d) |  | 219.75d → 213.75d |
| TAEXSTCSWP0009 | Riprap Works part 1 |  | 2026-10-28 → 2026-11-04 (+7d) |  | 219.75d → 213.75d |
| TAEXSTCSWP0012 | Outfall structure works |  | 2026-12-22 → 2026-12-29 (+7d) |  | 219.75d → 213.75d |
| TAEXSTCSWP0010 | Riprap Works Part 2 |  | 2026-11-01 → 2026-11-08 (+7d) |  | 219.75d → 213.75d |
| TAEXSTCSWP0011 | Sand Marl Mix Ballast layer | 2026-11-01 → 2026-11-08 (+7d) | 2026-11-15 → 2026-11-22 (+7d) |  | 219.75d → 213.75d |
| 22 | **CLOSE OUT** | 2027-02-03 → 2027-02-06 (+3d) | 2027-10-02 → 2027-10-07 (+5d) |  |  |
| 3 | **Final Testing and Commmisionning** | 2027-02-03 → 2027-02-06 (+3d) | 2027-09-11 → 2027-09-18 (+7d) |  |  |

| ID | Task | Start | Finish | Total float |
| --- | --- | --- | --- | --- |
| 1 | **Final Test & commisionning Zone 1** | 2027-03-11 → 2027-03-04 (-7d) | 2027-07-01 → 2027-07-05 (+4d) |  |
| TACOFTFT0007 | Sewerage Networks | 2027-03-11 → 2027-03-04 (-7d) | 2027-03-18 → 2027-03-11 (-7d) | 135.46d → 141.56d |
| TACOFTFT0008 | Storm Water Drainage Networks | 2027-03-11 → 2027-03-04 (-7d) | 2027-03-20 → 2027-03-13 (-7d) | 130.46d → 136.56d |
| TACOFTFT0006 | TSE Networks | 2027-03-13 → 2027-03-20 (+7d) | 2027-03-17 → 2027-03-24 (+7d) | 136.32d → 130.32d |
| TACOFTFT0005 | Potable Water Networks | 2027-04-10 → 2027-04-17 (+7d) | 2027-04-14 → 2027-04-21 (+7d) | 112.32d → 106.32d |
| TACOFTFT0003 | Telecommunications Networks | 2027-06-01 → 2027-06-08 (+7d) | 2027-06-06 → 2027-06-13 (+7d) | 61.05d → 55.05d |
| TACOFTFT0004 | CCTV Networks | 2027-06-07 → 2027-06-14 (+7d) | 2027-06-15 → 2027-06-22 (+7d) | 59.45d → 53.45d |
| TACOFTFT0002 | Electrical NetWorks | 2027-06-14 → 2027-06-17 (+3d) | 2027-06-22 → 2027-06-26 (+4d) | 47.86d → 44.9d |
| TACOFTFT0001 | Road Works | 2027-06-27 → 2027-06-30 (+3d) | 2027-07-01 → 2027-07-05 (+4d) | 20.86d → 17.9d |
| 2 | **Final Test & commisionning Zone 2** | 2027-02-03 → 2027-02-06 (+3d) | 2027-09-01 → 2027-09-07 (+6d) |  |
| TACOFTFT0015 | Sewerage Networks | 2027-02-03 → 2027-02-06 (+3d) | 2027-02-10 → 2027-02-13 (+3d) | 145.66d → 143.41d |
| TACOFTFT0013 | Potable Water Networks | 2027-03-20 → 2027-03-25 (+5d) | 2027-03-24 → 2027-03-30 (+6d) | 135.36d → 130.44d |
| TACOFTFT0016 | Storm Water Drainage Networks | 2027-03-29 → 2027-03-27 (-2d) | 2027-04-06 → 2027-04-04 (-2d) | 110.01d → 112.41d |
| TACOFTFT0014 | TSE Networks | 2027-03-29 → 2027-03-28 (-1d) | 2027-04-03 → 2027-04-01 (-2d) | 129.46d → 130.96d |
| TACOFTFT0010 | Electrical NetWorks | 2027-06-01 → 2027-06-08 (+7d) | 2027-06-09 → 2027-06-16 (+7d) | 45.05d → 39.05d |
| TACOFTFT0011 | Telecommunications Networks | 2027-06-21 → 2027-06-28 (+7d) | 2027-06-29 → 2027-07-06 (+7d) | 27.73d → 21.73d |
| TACOFTFT0009 | Road Works | 2027-07-21 → 2027-07-24 (+3d) | 2027-07-29 → 2027-08-01 (+3d) | 3.32d → 1.84d |
| TACOFTFT0012 | CCTV Networks | 2027-08-24 → 2027-08-31 (+7d) | 2027-09-01 → 2027-09-07 (+6d) | -6.55d → -12.55d |
| 3 | **Final Test & commisionning Zone 3** | 2027-03-07 → 2027-03-09 (+2d) | 2027-09-11 → 2027-09-18 (+7d) |  |
| TACOFTFT0023 | Sewerage Networks | 2027-03-07 → 2027-03-09 (+2d) | 2027-03-13 → 2027-03-15 (+2d) | 124.96d → 122.71d |
| TACOFTFT0021 | Potable Water Networks | 2027-05-29 → 2027-06-05 (+7d) | 2027-06-03 → 2027-06-10 (+7d) | 79.04d → 73.04d |
| TACOFTFT0022 | TSE Networks | 2027-06-06 → 2027-06-13 (+7d) | 2027-06-09 → 2027-06-16 (+7d) | 74.55d → 68.55d |
| TACOFTFT0017 | Road Works | 2027-07-29 → 2027-08-01 (+3d) | 2027-08-02 → 2027-08-04 (+2d) | 3.32d → 1.84d |
| TACOFTFT0024 | Storm Water Drainage Networks | 2027-08-05 → 2027-08-12 (+7d) | 2027-08-14 → 2027-08-21 (+7d) | 6.64d → 0.97d |
| TACOFTFT0019 | Telecommunications Networks | 2027-08-17 → 2027-08-24 (+7d) | 2027-08-25 → 2027-09-01 (+7d) | -14.27d → -20.27d |
| TACOFTFT0018 | Electrical NetWorks | 2027-08-30 → 2027-09-04 (+5d) | 2027-09-06 → 2027-09-12 (+6d) | -24.71d → -29.3d |
| TACOFTFT0020 | CCTV Networks | 2027-09-01 → 2027-09-07 (+6d) | 2027-09-11 → 2027-09-18 (+7d) | -6.55d → -12.55d |
| 2 | **AS BUILT DRAWINGS** | 2027-03-07 → 2027-03-09 (+2d) | 2027-09-13 → 2027-09-19 (+6d) |  |
| 1 | **AS BUILT DRAWINGS Zone 1** | 2027-03-13 → 2027-03-15 (+2d) | 2027-09-13 → 2027-09-19 (+6d) |  |
| TACOFTAD0007 | Sewerage Networks | 2027-03-13 → 2027-03-15 (+2d) | 2027-03-24 → 2027-03-27 (+3d) | 124.96d → 122.71d |
| TACOFTAD0005 | Potable Water Networks | 2027-05-17 → 2027-05-24 (+7d) | 2027-05-29 → 2027-06-05 (+7d) | 68.04d → 62.04d |
| TACOFTAD0006 | TSE Networks | 2027-05-30 → 2027-06-06 (+7d) | 2027-06-10 → 2027-06-17 (+7d) | 57.42d → 51.42d |
| TACOFTAD0008 | Storm Water Drainage Networks | 2027-07-25 → 2027-08-01 (+7d) | 2027-08-05 → 2027-08-12 (+7d) | 9.64d → 3.97d |
| TACOFTAD0001 | Road Works | 2027-08-02 → 2027-08-04 (+2d) | 2027-08-05 → 2027-08-08 (+3d) | 3.32d → 1.84d |
| TACOFTAD0004 | CCTV Networks | 2027-08-24 → 2027-08-31 (+7d) | 2027-08-29 → 2027-09-04 (+6d) | -10.27d → -16.27d |
| TACOFTAD0003 | Telecommunications Networks | 2027-08-25 → 2027-09-01 (+7d) | 2027-09-02 → 2027-09-08 (+6d) | -14.27d → -20.27d |
| TACOFTAD0002 | Electrical NetWorks | 2027-09-06 → 2027-09-12 (+6d) | 2027-09-13 → 2027-09-19 (+6d) | -24.71d → -29.3d |
| 2 | **AS BUILT DRAWINGS Zone 2** | 2027-03-07 → 2027-03-09 (+2d) | 2027-09-13 → 2027-09-19 (+6d) |  |
| TACOFTAD0015 | Sewerage Networks | 2027-03-07 → 2027-03-09 (+2d) | 2027-03-24 → 2027-03-27 (+3d) | 124.96d → 122.71d |
| TACOFTAD0013 | Potable Water Networks | 2027-05-17 → 2027-05-24 (+7d) | 2027-05-29 → 2027-06-05 (+7d) | 68.04d → 62.04d |
| TACOFTAD0014 | TSE Networks | 2027-05-30 → 2027-06-06 (+7d) | 2027-06-10 → 2027-06-17 (+7d) | 57.42d → 51.42d |
| TACOFTAD0016 | Storm Water Drainage Networks | 2027-07-19 → 2027-07-26 (+7d) | 2027-08-05 → 2027-08-12 (+7d) | 9.64d → 3.97d |
| TACOFTAD0009 | Road Works | 2027-08-05 → 2027-08-08 (+3d) | 2027-08-09 → 2027-08-11 (+2d) | 3.32d → 1.84d |
| TACOFTAD0012 | CCTV Networks | 2027-08-24 → 2027-08-31 (+7d) | 2027-08-29 → 2027-09-04 (+6d) | -10.27d → -16.27d |
| TACOFTAD0011 | Telecommunications Networks | 2027-08-25 → 2027-09-01 (+7d) | 2027-09-02 → 2027-09-08 (+6d) | -14.27d → -20.27d |
| TACOFTAD0010 | Electrical NetWorks | 2027-09-05 → 2027-09-11 (+6d) | 2027-09-13 → 2027-09-19 (+6d) | -24.71d → -29.3d |
| 3 | **AS BUILT DRAWINGS Zone 3** | 2027-03-13 → 2027-03-15 (+2d) | 2027-09-13 → 2027-09-19 (+6d) |  |
| TACOFTAD0023 | Sewerage Networks | 2027-03-13 → 2027-03-15 (+2d) | 2027-03-24 → 2027-03-27 (+3d) | 124.96d → 122.71d |
| TACOFTAD0021 | Potable Water Networks | 2027-05-17 → 2027-05-24 (+7d) | 2027-05-29 → 2027-06-05 (+7d) | 68.04d → 62.04d |
| TACOFTAD0022 | TSE Networks | 2027-05-30 → 2027-06-06 (+7d) | 2027-06-10 → 2027-06-17 (+7d) | 57.42d → 51.42d |
| TACOFTAD0024 | Storm Water Drainage Networks | 2027-07-25 → 2027-08-01 (+7d) | 2027-08-05 → 2027-08-12 (+7d) | 9.64d → 3.97d |
| TACOFTAD0017 | Road Works | 2027-08-09 → 2027-08-11 (+2d) | 2027-08-12 → 2027-08-15 (+3d) | 3.32d → 1.84d |
| TACOFTAD0020 | CCTV Networks | 2027-08-23 → 2027-08-30 (+7d) | 2027-08-29 → 2027-09-04 (+6d) | -10.27d → -16.27d |
| TACOFTAD0019 | Telecommunications Networks | 2027-08-25 → 2027-09-01 (+7d) | 2027-09-02 → 2027-09-08 (+6d) | -14.27d → -20.27d |
| TACOFTAD0018 | Electrical NetWorks | 2027-09-05 → 2027-09-11 (+6d) | 2027-09-13 → 2027-09-19 (+6d) | -24.71d → -29.3d |
| 1 | **DEMOBILIZATION** | 2027-09-13 → 2027-09-19 (+6d) | 2027-10-02 → 2027-10-07 (+5d) |  |
| TAPCDZ00000001 | Demobilization Manpower | 2027-09-13 → 2027-09-19 (+6d) | 2027-09-20 → 2027-09-26 (+6d) | -24.71d → -29.3d |
| TAPCDZ00000002 | Remove Offices and Structures | 2027-09-20 → 2027-09-26 (+6d) | 2027-09-26 → 2027-10-02 (+6d) | -24.71d → -29.3d |
| TAPCDZ00000022 | Restore Ground Surfaces | 2027-09-25 → 2027-09-30 (+5d) | 2027-10-02 → 2027-10-07 (+5d) | -24.71d → -29.3d |
| TAPCDZ00000012 | Demobilize Equipment from Site | 2027-09-26 → 2027-10-02 (+6d) | 2027-10-02 → 2027-10-07 (+5d) | -24.71d → -29.3d |
| TAPCDZ00000032 | Final Handover | 2027-10-02 → 2027-10-07 (+5d) | 2027-10-02 → 2027-10-07 (+5d) | -24.71d → -29.3d |

## Version 5 (data date 2026-10-26, saved 2026-10-27, file 26-10-2026.xer)

Last finish stays 2027-10-07. Complete tasks 587 → 601.

Changed:

| ID | Task | Start | Finish | Complete | Total float |
| --- | --- | --- | --- | --- | --- |
| 1 | **NET WORK MILESTONES** |  | 2027-10-04 → 2027-10-07 (+3d) |  |  |
| TAGNML0008 | Start CCTV Works | 2026-10-19 → 2026-10-26 (+7d) | 2026-10-19 → 2026-10-26 (+7d) |  | -8d → -14d |
| TAGNML0019 | Finish Sewerage Networks | 2027-03-27 → 2027-03-21 (-6d) | 2027-03-27 → 2027-03-21 (-6d) |  | 138.71d → 143.36d |
| TAGNML0017 | Finish Potable Water Networks | 2027-06-10 → 2027-06-17 (+7d) | 2027-06-10 → 2027-06-17 (+7d) |  | 73.04d → 67.04d |
| TAGNML0018 | Finish TSE Networks | 2027-06-16 → 2027-06-23 (+7d) | 2027-06-16 → 2027-06-23 (+7d) |  | 68.55d → 62.55d |
| TAGNML0020 | Finish Storm Water Drainage Networks | 2027-08-12 → 2027-07-29 (-14d) | 2027-08-12 → 2027-07-29 (-14d) |  | 19.97d → 31.79d |
| TAGNML0032 | Finish works for Amana Road | 2027-08-22 → 2027-08-16 (-6d) | 2027-08-22 → 2027-08-16 (-6d) |  | 11.84d → 16.13d |
| TAGNML0015 | Finish Teleommunications Works | 2027-09-08 → 2027-09-12 (+4d) | 2027-09-08 → 2027-09-12 (+4d) |  | -4.27d → -7.61d |
| TAGNML0016 | Finish CCTV Works | 2027-09-18 → 2027-09-25 (+7d) | 2027-09-18 → 2027-09-25 (+7d) |  | -12.55d → -18.55d |
| TAGNML0013 | Finish Road Works | 2027-10-04 → 2027-10-07 (+3d) | 2027-10-04 → 2027-10-07 (+3d) |  | -26.1d → -29.48d |
| 4 | **ZONES MILESTONES** |  | 2027-07-24 → 2027-07-18 (-6d) |  |  |
| TAGNZM0006 | Finish Zone 3 | 2027-06-05 → 2027-06-12 (+7d) | 2027-06-05 → 2027-06-12 (+7d) |  | 78.04d → 72.04d |
| TAGNZM0004 | Finish Zone 1 | 2027-06-30 → 2027-06-24 (-6d) | 2027-06-30 → 2027-06-24 (-6d) |  | 56.9d → 61.19d |
| TAGNZM0005 | Finish Zone 2 | 2027-07-24 → 2027-07-18 (-6d) | 2027-07-24 → 2027-07-18 (-6d) |  | 11.84d → 16.13d |
| 3 | **PRELIMINARY SUBMITTALS** |  | 2026-11-17 → 2026-11-24 (+7d) |  |  |
| TAGNPS0002 | Shop drawing complete |  | 2026-11-17 → 2026-11-24 (+7d) |  | 6.2d → 5.4d |
| 5 | **MOBILIZATION** |  | 2027-08-31 → 2027-08-23 (-8d) |  |  |
| 2 | **Site Facilites and Offices** |  | 2027-08-31 → 2027-08-23 (-8d) |  |  |
| TAGNMZ9 | Office Operation part 01 |  | 2027-08-31 → 2027-08-23 (-8d) | 29% → 32% | -6.01d → 0.01d |
| 17 | **PROCUREMENT** |  | 2027-10-04 → 2027-10-07 (+3d) |  |  |
| 17 | **Material Fabrication and Delivery** |  | 2027-10-04 → 2027-10-07 (+3d) |  |  |
| 1 | **Material Fabrication and Delivery for Road Works** |  | 2027-10-04 → 2027-10-07 (+3d) |  |  |
| TAPQDVRD00011 | ABC Delivery to Site Part 01 |  | 2026-11-29 → 2026-12-05 (+6d) | 50% → 52% | -29.3d → -29.48d |
| TAPQDVRD00021 | BBC Base Course Delivery to Site Part 01 |  | 2027-07-12 → 2027-07-06 (-6d) |  | 1.84d → 6.13d |
| TAPQDVRD00041 | Precast Concrete Curbstone Delivery to Site part 01 |  | 2027-07-28 → 2027-08-01 (+4d) | 14% → 16% | -26.1d → -29.48d |
| TAPQDVRD0003 | BWC Asphalt Wearing Course Delivery to Site | 2027-07-12 → 2027-07-06 (-6d) | 2027-08-22 → 2027-08-16 (-6d) |  | 2.84d → 7.13d |
| TAPQDVRD00081 | Marking for Road delivery to site Part 01 | 2027-07-12 → 2027-07-06 (-6d) | 2027-07-18 → 2027-07-12 (-6d) |  | 1.84d → 6.13d |
| TAPQDVRD00091 | Trafic Sinage delivery to site Part 01 | 2027-08-22 → 2027-08-16 (-6d) | 2027-09-01 → 2027-08-26 (-6d) |  | 2.84d → 7.13d |
| TAPQDVRD0005 | Precast Concrete Interlocking Delivery to Site | 2027-08-19 → 2027-08-23 (+4d) | 2027-10-04 → 2027-10-07 (+3d) |  | -26.1d → -29.48d |
| 10 | **Material Fabrication and Delivery for Electrical Works** |  | 2027-04-14 → 2027-04-17 (+3d) |  |  |
| TAPQDVEL0002 | cables (LV,MV )Delivery to Site) |  | 2026-12-30 → 2027-01-06 (+7d) |  | -20.27d → -21.47d |
| TAPQDVEL00011 | Pipes ,Fittings Delivery to Site Part 01 |  | 2026-10-21 → 2026-10-28 (+7d) |  | -20.27d → -23.61d |
| TAPQDVEL0003 | Poles & Luminares Delivery to Site | 2026-12-30 → 2026-10-21 A (-70d) | 2027-03-10 → 2027-03-13 (+3d) | 0% → 8% | -20.27d → -21.47d |
| TAPQDVEL0005 | Pre cast Drawpits and Pole Foundation Delivery | 2027-02-27 → 2026-10-24 A (-126d) | 2027-04-14 → 2027-04-17 (+3d) | 0% → 1% | -20.27d → -21.47d |
| 11 | **Material Fabrication and Delivery for Telecommunication** |  | 2026-10-27 → 2026-11-03 (+7d) |  |  |
| TAPQDVTC0001 | Telecommunication Material (Pipes,,ets) Delivery |  | 2026-10-27 → 2026-11-03 (+7d) |  | -17.61d → -23.61d |
| 12 | **Material Fabrication and Delivery for CCTV Networks** |  | 2026-12-01 → 2026-12-08 (+7d) |  |  |
| TAPQDVCC0001 | CCTV Material Cabls,Camera,Devices,ets) Delivery |  | 2026-12-01 → 2026-12-08 (+7d) |  | -15.55d → -21.55d |
| 15 | **Material Fabrication and Delivery for Sewerage Networks** |  | 2026-12-06 → 2026-12-13 (+7d) |  |  |
| TAPQDVSW00011 | GRP Pipes Delivery to Site Part 01 |  | 2026-10-26 → 2026-11-02 (+7d) |  | 7.39d → 14.49d |
| TAPQDVSW00021 | Fiberglass Manholes,ets) Delivery Part 01 | 2026-10-26 → 2026-11-02 (+7d) | 2026-12-06 → 2026-12-13 (+7d) |  | 7.39d → 14.49d |
| 16 | **Material Fabrication and Delivery for Storm Networks** |  | 2026-12-12 → 2026-12-19 (+7d) |  |  |
| TAPQDVST00051 | Box Culvert Delivery part 01 |  | 2026-11-21 → 2026-10-25 A (-27d) | 30% → 100% | 2.5d → none |
| TAPQDVST0009 | Catchbasin Delivery to Site |  | 2026-11-01 → 2026-11-08 (+7d) | 81% → 83% | 43.64d → 45.74d |
| TAPQDVST00071 | RIprab,Sand,Marl gravel Delivery for Ponds part 01 |  | 2026-10-28 → 2026-11-04 (+7d) |  | 218.4d → 212.4d |
| TAPQDVST00061 | Manholes,ets Delivery part 01 |  | 2026-12-12 → 2026-12-19 (+7d) |  | 2.5d → 9.1d |
| TAPQDVST00041 | GRP Pipes with Fittings Delivery Part 4 |  | 2026-10-27 → 2026-10-25 A (-2d) | 88% → 100% | 2.5d → none |
| 1 | **Collector Road 02** |  | 2027-06-30 → 2027-06-24 (-6d) |  |  |
| 10 | **Road Works** |  | 2027-06-30 → 2027-06-24 (-6d) |  |  |
| TAEXRDCC020004 | ABC aggregate Base Course Works |  | 2027-05-08 → 2027-05-03 (-5d) | 35% → 45% | 1.84d → 6.13d |
| TAEXRDCC020005 | MBC1 layer |  | 2027-05-09 → 2027-05-04 (-5d) | 9% → 38% | 1.84d → 6.13d |
| TAEXRDCC020006 | BBC Base Course |  | 2027-05-13 → 2027-05-08 (-5d) |  | 1.84d → 6.13d |
| TAEXRDCC0200021 | Backfilling Works for Road Part 01 | 2027-04-07 → 2026-10-25 A (-164d) | 2027-04-17 → 2027-04-15 (-2d) | 0% → 20% | 1.84d → 6.13d |
| TAEXRDCC0200031 | Subgrade Works Part 01 | 2027-04-17 → 2026-10-25 A (-174d) | 2027-04-26 → 2027-04-22 (-4d) | 0% → 25% | 1.84d → 6.13d |
| TAEXRDCC020008 | Precast Concret Kerps | 2027-05-13 → 2027-05-08 (-5d) | 2027-05-26 → 2027-05-20 (-6d) |  | 13.9d → 18.19d |
| TAEXRDCC020007 | BWC Asphalt Wearing Course with RC | 2027-05-26 → 2027-05-20 (-6d) | 2027-05-29 → 2027-05-23 (-6d) |  | 17.9d → 22.19d |
| TAEXRDCC020009 | Precast Interlock Works | 2027-05-29 → 2027-05-23 (-6d) | 2027-06-19 → 2027-06-13 (-6d) |  | 17.9d → 22.19d |
| TAEXRDCC020010 | Stone Paving works | 2027-06-19 → 2027-06-13 (-6d) | 2027-06-27 → 2027-06-21 (-6d) |  | 17.9d → 22.19d |
| TAEXRDCC020011 | Road Marking | 2027-06-27 → 2027-06-21 (-6d) | 2027-06-29 → 2027-06-23 (-6d) |  | 17.9d → 22.19d |
| TAEXRDCC020012 | Traffic Sinage | 2027-06-29 → 2027-06-23 (-6d) | 2027-06-30 → 2027-06-24 (-6d) |  | 17.9d → 22.19d |
| 11 | **Electrical Works** |  | 2027-05-05 → 2027-05-08 (+3d) |  |  |
| TAEXELCC020003 | Road Crossing Ducts |  | 2027-03-08 → 2027-03-09 (+1d) |  | 1.84d → 6.13d |
| TAEXELCC020002 | Drawpit and PVC Pipes Installation |  | 2027-03-06 → 2027-03-07 (+1d) |  | 1.84d → 6.13d |
| TAEXELCC020001 | Trench Cut off | 2026-12-10 → 2026-12-16 (+6d) | 2027-01-03 → 2027-01-09 (+6d) |  | 49.29d → 50.2d |
| TAEXELCC020004 | Trench Backfilling | 2027-03-08 → 2027-03-09 (+1d) | 2027-03-29 → 2027-03-30 (+1d) |  | 1.84d → 6.13d |
| TAEXELCC020005 | Cables Pulling | 2027-03-29 → 2027-03-30 (+1d) | 2027-04-07 → 2027-04-08 (+1d) |  | 1.84d → 6.13d |
| TAEXELCC020006 | Poles RC Foundation | 2027-04-14 → 2027-04-17 (+3d) | 2027-04-21 → 2027-04-24 (+3d) |  | 44.05d → 42.85d |
| TAEXELCC020007 | Earthing cables | 2027-04-21 → 2027-04-24 (+3d) | 2027-05-03 → 2027-05-05 (+2d) |  | 44.05d → 42.85d |
| TAEXELCC020008 | Lighting Pole Installation with Luminares | 2027-04-21 → 2027-04-24 (+3d) | 2027-05-05 → 2027-05-08 (+3d) |  | 51.05d → 49.85d |
| 12 | **Telecommunication Works** |  | 2027-05-12 → 2027-05-15 (+3d) |  |  |

| ID | Task | Start | Finish | Complete | Total float |
| --- | --- | --- | --- | --- | --- |
| TAEXTCCC020002 | Drawpit and PVC Pipes Installation |  | 2027-04-19 → 2027-04-21 (+2d) |  | -20.27d → -21.47d |
| TAEXTCCC020003 | Road Crossing Ducts |  | 2027-04-21 → 2027-04-24 (+3d) |  | 75.05d → 73.85d |
| TAEXTCCC020001 | Trench Cut off | 2026-10-21 → 2026-10-28 (+7d) | 2026-11-14 → 2026-11-21 (+7d) |  | -17.61d → -23.61d |
| TAEXTCCC020004 | Trench Backfilling | 2027-04-21 → 2027-04-24 (+3d) | 2027-05-12 → 2027-05-15 (+3d) |  | 75.05d → 73.85d |
| 13 | **CCTV Works** | 2027-02-25 → 2027-03-04 (+7d) | 2027-05-06 → 2027-05-13 (+7d) |  |  |
| TAEXCCCC020001 | Pipe Installation with manhole | 2027-02-25 → 2027-03-04 (+7d) | 2027-03-09 → 2027-03-16 (+7d) |  | -15.55d → -21.55d |
| TAEXCCCC020002 | CCTV Swiches Lighting panels Installation | 2027-03-09 → 2027-03-16 (+7d) | 2027-03-30 → 2027-04-06 (+7d) |  | -15.55d → -21.55d |
| TAEXCCCC020003 | Cable laying and connected with Panels | 2027-03-30 → 2027-04-06 (+7d) | 2027-04-15 → 2027-04-22 (+7d) |  | 83.45d → 77.45d |
| TAEXCCCC020004 | Pole Installation with IP Outdoor CCTV POE Camera | 2027-04-15 → 2027-04-22 (+7d) | 2027-05-06 → 2027-05-13 (+7d) |  | 83.45d → 77.45d |
| 16 | **Sewerage Networks** |  | 2027-02-06 → 2027-01-31 (-6d) |  |  |
| TAEXSWCC0200061 | Leakage Test Part 01 |  | 2027-02-06 → 2027-01-31 (-6d) |  | 143.41d → 148.06d |
| 17 | **Storm Networks** |  | 2027-02-06 → 2026-10-25 (-104d) |  |  |
| TAEXSTCC020006 | Install Catch Basin with UPVC Pipes & Fittings |  | 2027-02-06 → 2026-10-25 A (-104d) | 95% → 100% | 27.4d → none |
| 2 | **Collector Road 03** |  | 2027-06-17 → 2027-06-12 (-5d) |  |  |
| 10 | **Road Works** |  | 2027-06-10 → 2027-06-05 (-5d) |  |  |
| TAEXRDCC030007 | BWC Asphalt Wearing Course with RC | 2027-05-26 → 2027-05-20 (-6d) | 2027-05-29 → 2027-05-23 (-6d) |  | 26.9d → 31.19d |
| TAEXRDCC030009 | Precast Interlock Works | 2027-05-29 → 2027-05-23 (-6d) | 2027-06-05 → 2027-05-30 (-6d) |  | 34.9d → 39.19d |
| TAEXRDCC030010 | Stone Paving works | 2027-06-05 → 2027-05-30 (-6d) | 2027-06-07 → 2027-06-01 (-6d) |  | 34.9d → 39.19d |
| TAEXRDCC030011 | Road Marking | 2027-06-07 → 2027-06-01 (-6d) | 2027-06-08 → 2027-06-02 (-6d) |  | 34.9d → 39.19d |
| TAEXRDCC030012 | Traffic Sinage | 2027-06-08 → 2027-06-02 (-6d) | 2027-06-10 → 2027-06-05 (-5d) |  | 34.9d → 39.19d |
| 1 | **Electrical Works** |  | 2027-06-17 → 2027-06-12 (-5d) |  |  |
| TAEXELCC0300011 | Trench Cut off Part 01 | 2026-11-29 → 2026-12-05 (+6d) | 2026-12-10 → 2026-12-16 (+6d) |  | -29.3d → -28.68d |
| TAEXELCC030005 | Cables Pulling | 2027-05-26 → 2027-05-20 (-6d) | 2027-05-31 → 2027-05-25 (-6d) |  | 13.9d → 18.19d |
| TAEXELCC0300041 | Trench Backfilling Part 01 | 2027-05-31 → 2027-05-25 (-6d) | 2027-06-05 → 2027-05-30 (-6d) |  | 13.9d → 18.19d |
| TAEXELCC030006 | Poles RC Foundation | 2027-06-05 → 2027-05-30 (-6d) | 2027-06-08 → 2027-06-02 (-6d) |  | 13.9d → 18.19d |
| TAEXELCC030007 | Earthing cables | 2027-06-08 → 2027-06-02 (-6d) | 2027-06-10 → 2027-06-05 (-5d) |  | 13.9d → 18.19d |
| TAEXELCC030008 | Lighting Pole Installation with Luminares | 2027-06-08 → 2027-06-02 (-6d) | 2027-06-17 → 2027-06-12 (-5d) |  | 44.9d → 49.19d |
| 2 | **Telecommunication Works** | 2026-12-07 → 2026-12-14 (+7d) | 2027-05-13 → 2027-05-16 (+3d) |  |  |
| TAEXTCCC030001 | Trench Cut off | 2026-12-07 → 2026-12-14 (+7d) | 2026-12-19 → 2026-12-26 (+7d) |  | -17.61d → -23.61d |
| TAEXTCCC030002 | Drawpit and PVC Pipes Installation | 2027-04-19 → 2027-04-21 (+2d) | 2027-04-27 → 2027-04-29 (+2d) |  | -20.27d → -21.47d |
| TAEXTCCC030003 | Road Crossing Ducts | 2027-04-27 → 2027-04-29 (+2d) | 2027-04-29 → 2027-05-02 (+3d) |  | 74.05d → 72.85d |
| TAEXTCCC030004 | Trench Backfilling | 2027-04-29 → 2027-05-02 (+3d) | 2027-05-13 → 2027-05-16 (+3d) |  | 74.05d → 72.85d |
| 3 | **CCTV Works** | 2026-10-27 → 2026-11-03 (+7d) | 2027-05-04 → 2027-05-11 (+7d) |  |  |
| TAEXCCCC030001 | Pipe Installation with manhole | 2026-10-27 → 2026-11-03 (+7d) | 2026-11-04 → 2026-11-11 (+7d) |  | -15.55d → -21.55d |
| TAEXCCCC030002 | CCTV Swiches Lighting panels Installation | 2027-03-30 → 2027-04-06 (+7d) | 2027-04-13 → 2027-04-20 (+7d) |  | -15.55d → -21.55d |
| TAEXCCCC030003 | Cable laying and connected with Panels | 2027-04-13 → 2027-04-20 (+7d) | 2027-04-22 → 2027-04-29 (+7d) |  | 85.45d → 79.45d |
| TAEXCCCC030004 | Pole Installation with IP Outdoor CCTV POE Camera | 2027-04-22 → 2027-04-29 (+7d) | 2027-05-04 → 2027-05-11 (+7d) |  | 85.45d → 79.45d |
| 8 | **Upgrade local 21** |  | 2027-06-27 → 2027-06-29 (+2d) |  |  |
| 22 | **Road Works** | 2027-05-26 → 2027-05-20 (-6d) | 2027-06-26 → 2027-06-20 (-6d) |  |  |
| TAEXRDCU210002 | Precast Concret Kerps | 2027-05-26 → 2027-05-20 (-6d) | 2027-06-06 → 2027-05-31 (-6d) |  | 21.9d → 26.19d |
| TAEXRDCU210001 | BWC Asphalt Wearing Course with RC | 2027-06-06 → 2027-05-31 (-6d) | 2027-06-07 → 2027-06-01 (-6d) |  | 21.9d → 26.19d |
| TAEXRDCU210003 | Precast Interlock Works | 2027-06-07 → 2027-06-01 (-6d) | 2027-06-15 → 2027-06-09 (-6d) |  | 21.9d → 26.19d |
| TAEXRDCU210004 | Stone Paving works | 2027-06-15 → 2027-06-09 (-6d) | 2027-06-21 → 2027-06-15 (-6d) |  | 21.9d → 26.19d |
| TAEXRDCU210005 | Road Marking | 2027-06-21 → 2027-06-15 (-6d) | 2027-06-22 → 2027-06-16 (-6d) |  | 21.9d → 26.19d |
| TAEXRDCU210006 | Traffic Sinage | 2027-06-22 → 2027-06-16 (-6d) | 2027-06-26 → 2027-06-20 (-6d) |  | 21.9d → 26.19d |
| 13 | **Electrical Works** | 2026-12-10 → 2026-12-16 (+6d) | 2027-06-27 → 2027-06-29 (+2d) |  |  |
| TAEXELCU210001 | Trench Cut off | 2026-12-10 → 2026-12-16 (+6d) | 2026-12-26 → 2026-12-31 (+5d) |  | -29.3d → -28.68d |
| TAEXELCU210002 | Drawpit and PVC Pipes Installation | 2027-04-28 → 2027-05-01 (+3d) | 2027-05-12 → 2027-05-15 (+3d) |  | 8.05d → 6.85d |
| TAEXELCU210003 | Road Crossing Ducts | 2027-05-12 → 2027-05-15 (+3d) | 2027-05-19 → 2027-05-22 (+3d) |  | 8.05d → 6.85d |
| TAEXELCU210006 | Poles RC Foundation | 2027-05-12 → 2027-05-15 (+3d) | 2027-05-22 → 2027-05-24 (+2d) |  | 30.05d → 28.85d |
| TAEXELCU210004 | Trench Backfilling | 2027-05-19 → 2027-05-22 (+3d) | 2027-06-09 → 2027-06-12 (+3d) |  | 8.05d → 6.85d |
| TAEXELCU210008 | Lighting Pole Installation with Luminares | 2027-05-22 → 2027-05-24 (+2d) | 2027-06-02 → 2027-06-05 (+3d) |  | 57.05d → 55.85d |
| TAEXELCU210005 | Cables Pulling | 2027-06-09 → 2027-06-12 (+3d) | 2027-06-16 → 2027-06-19 (+3d) |  | 8.05d → 6.85d |
| TAEXELCU210007 | Earthing cables | 2027-06-16 → 2027-06-19 (+3d) | 2027-06-21 → 2027-06-23 (+2d) |  | 8.05d → 6.85d |
| TAEXELCU210009 | Install Substation & RMU | 2027-06-16 → 2027-06-19 (+3d) | 2027-06-27 → 2027-06-29 (+2d) |  | 37.05d → 35.85d |
| 1 | **Telecommunication Works** | 2027-01-11 → 2027-01-18 (+7d) | 2027-06-08 → 2027-06-10 (+2d) |  |  |
| TAEXTCCU210001 | Trench Cut off | 2027-01-11 → 2027-01-18 (+7d) | 2027-01-27 → 2027-02-03 (+7d) |  | -17.61d → -23.61d |
| TAEXTCCU210002 | Drawpit and PVC Pipes Installation | 2027-04-27 → 2027-04-29 (+2d) | 2027-05-11 → 2027-05-13 (+2d) |  | -20.27d → -21.47d |
| TAEXTCCU210003 | Road Crossing Ducts | 2027-05-11 → 2027-05-13 (+2d) | 2027-05-18 → 2027-05-20 (+2d) |  | 52.05d → 50.85d |
| TAEXTCCU210004 | Trench Backfilling | 2027-05-18 → 2027-05-20 (+2d) | 2027-06-08 → 2027-06-10 (+2d) |  | 52.05d → 50.85d |
| 10 | **CCTV Works** | 2026-11-04 → 2026-11-11 (+7d) | 2027-06-01 → 2027-06-08 (+7d) |  |  |
| TAEXCCCU210001 | Pipe Installation with manhole | 2026-11-04 → 2026-11-11 (+7d) | 2026-11-21 → 2026-11-28 (+7d) |  | -15.55d → -21.55d |
| TAEXCCCU210002 | CCTV Swiches Lighting panels Installation | 2027-04-13 → 2027-04-20 (+7d) | 2027-05-02 → 2027-05-09 (+7d) |  | -15.55d → -21.55d |
| TAEXCCCU210003 | Cable laying and connected with Panels | 2027-05-02 → 2027-05-09 (+7d) | 2027-05-16 → 2027-05-23 (+7d) |  | 61.45d → 55.45d |
| TAEXCCCU210004 | Pole Installation with IP Outdoor CCTV POE Camera | 2027-05-16 → 2027-05-23 (+7d) | 2027-06-01 → 2027-06-08 (+7d) |  | 61.45d → 55.45d |
| 2 | **Potable Networks** |  | 2027-04-17 → 2027-04-22 (+5d) |  |  |
| TAEXPTCU210001 | Excavation works for Trench |  | 2026-11-14 → 2026-11-21 (+7d) |  | 62.04d → 56.04d |
| TAEXPTCU210005 | Install Valves with fittings |  | 2027-03-17 → 2027-03-24 (+7d) |  | 94.32d → 89.52d |
| TAEXPTCU210007 | Valve Chamber works |  | 2027-04-11 → 2027-04-17 (+6d) |  | 94.32d → 89.52d |
| TAEXPTCU210002 | Bedding Works |  | 2027-01-23 → 2027-01-28 (+5d) | 25% → 60% | 112.12d → 113.72d |

| ID | Task | Start | Finish | Complete | Total float |
| --- | --- | --- | --- | --- | --- |
| TAEXPTCU210003 | Install Pipes & Fittings |  | 2027-02-21 → 2027-02-22 (+1d) | 22% → 60% | 98.62d → 99.52d |
| TAEXPTCU210006 | Install fire hydrent | 2027-03-17 → 2026-10-25 A (-143d) | 2027-03-27 → 2027-03-31 (+4d) | 0% → 15% | 94.32d → 89.52d |
| TAEXPTCU210004 | Backfilling Works for Trench | 2027-02-27 → 2027-03-06 (+7d) | 2027-03-17 → 2027-03-24 (+7d) |  | 94.32d → 89.52d |
| TAEXPTCU210008 | Inspection Test | 2027-04-11 → 2027-04-17 (+6d) | 2027-04-17 → 2027-04-22 (+5d) |  | 94.32d → 89.52d |
| 3 | **TSE Networks** |  | 2027-03-20 → 2027-03-27 (+7d) |  |  |
| TAEXTSCU210005 | Install Valves with fittings |  | 2027-02-27 → 2027-03-06 (+7d) |  | 104.72d → 98.72d |
| TAEXTSCU210006 | Valve Chamber works |  | 2027-03-14 → 2027-03-21 (+7d) |  | 104.72d → 98.72d |
| TAEXTSCU210001 | Excavation works for Trench | 2026-12-16 → 2026-12-23 (+7d) | 2027-01-19 → 2027-01-26 (+7d) |  | 51.42d → 45.42d |
| TAEXTSCU210002 | Bedding Works | 2027-01-19 → 2027-01-26 (+7d) | 2027-01-21 → 2027-01-28 (+7d) |  | 94.32d → 89.52d |
| TAEXTSCU210003 | Install Pipes & Fittings | 2027-01-21 → 2027-01-28 (+7d) | 2027-02-08 → 2027-02-15 (+7d) |  | 94.32d → 89.52d |
| TAEXTSCU210004 | Backfilling Works for Trench | 2027-02-08 → 2027-02-15 (+7d) | 2027-02-27 → 2027-03-06 (+7d) |  | 94.32d → 89.52d |
| TAEXTSCU210007 | Inspection Test | 2027-03-14 → 2027-03-21 (+7d) | 2027-03-20 → 2027-03-27 (+7d) |  | 113.32d → 107.32d |
| 4 | **Sewerage Networks** |  | 2026-12-24 → 2026-12-30 (+6d) |  |  |
| TAEXSWCU210001 | Excavation works for Trench |  | 2026-11-11 → 2026-11-17 (+6d) |  | 131.68d → 139.63d |
| TAEXSWCU210002 | Bedding Works |  | 2026-11-12 → 2026-11-18 (+6d) | 60% → 75% | 193.53d → 190.58d |
| TAEXSWCU210003 | Install GRP Pipes & Fittings |  | 2026-11-18 → 2026-11-22 (+4d) | 55% → 75% | 193.53d → 190.58d |
| TAEXSWCU210005 | Manhole Installation with backfilling |  | 2026-12-20 → 2026-12-26 (+6d) | 20% → 30% | 191.35d → 186.85d |
| TAEXSWCU210004 | Backfilling Works for Trench |  | 2026-12-06 → 2026-12-09 (+3d) | 25% → 40% | 193.53d → 190.58d |
| TAEXSWCU210006 | Leakage Test | 2026-12-20 → 2026-12-26 (+6d) | 2026-12-24 → 2026-12-30 (+6d) |  | 191.35d → 186.85d |
| 5 | **Storm Networks** |  | 2027-02-06 → 2027-01-31 (-6d) |  |  |
| TAEXSTCU210007 | Leakage Test |  | 2027-02-06 → 2027-01-31 (-6d) |  | 143.41d → 148.06d |
| TAEXSTCU2100051 | Manhole Installation with backfilling Part 01 |  | 2026-12-15 → 2026-12-22 (+7d) |  | 26d → 28.1d |
| TAEXSTCU2100031 | Install GRP Pipes & Fittings Part 01 |  | 2026-10-21 → 2026-10-28 (+7d) |  | 47.54d → 49.64d |
| TAEXSTCU2100041 | Backfilling Works for Trench Part 01 |  | 2026-11-08 → 2026-11-15 (+7d) |  | 47.54d → 49.64d |
| TAEXSTCU2100021 | Bedding Works Part 01 | 2026-10-19 → 2026-10-26 (+7d) | 2026-10-19 → 2026-10-26 (+7d) |  | 47.54d → 49.64d |
| TAEXSTCU210006 | Install Catch Basin with UPVC Pipes & Fittings | 2027-01-11 → 2027-01-13 (+2d) | 2027-01-27 → 2027-01-30 (+3d) |  | 2.5d → 9.1d |
| TAEXELCU260001 | Trench Cut off |  | 2027-01-04 → 2027-01-09 (+5d) |  | -29.3d → -28.68d |
| TAEXELCU260005 | Cables Pulling |  | 2027-04-27 → 2027-04-28 (+1d) |  | 107.55d → 106.35d |
| TAEXELCU260004 | Trench Backfilling |  | 2027-04-25 → 2027-04-26 (+1d) |  | 107.55d → 106.35d |
| TAEXELCU260006 | Poles RC Foundation | 2027-04-14 → 2027-04-17 (+3d) | 2027-04-21 → 2027-04-24 (+3d) |  | 85.05d → 83.85d |
| TAEXELCU260008 | Lighting Pole Installation with Luminares | 2027-04-21 → 2027-04-24 (+3d) | 2027-05-01 → 2027-05-03 (+2d) |  | 85.05d → 83.85d |
| 10 | **CCTV Works** | 2026-11-21 → 2026-11-28 (+7d) | 2027-06-06 → 2027-06-13 (+7d) |  |  |
| TAEXCCCU260001 | Pipe Installation with manhole | 2026-11-21 → 2026-11-28 (+7d) | 2026-12-02 → 2026-12-09 (+7d) |  | -15.55d → -21.55d |
| TAEXCCCU260002 | CCTV Swiches Lighting panels Installation | 2027-05-02 → 2027-05-09 (+7d) | 2027-05-16 → 2027-05-23 (+7d) |  | -15.55d → -21.55d |
| TAEXCCCU260003 | Cable laying and connected with Panels | 2027-05-16 → 2027-05-23 (+7d) | 2027-05-25 → 2027-06-01 (+7d) |  | 57.45d → 51.45d |
| TAEXCCCU260004 | Pole Installation with IP Outdoor CCTV POE Camera | 2027-05-25 → 2027-06-01 (+7d) | 2027-06-06 → 2027-06-13 (+7d) |  | 57.45d → 51.45d |
| 3 | **Local Road 10** |  | 2027-06-23 → 2027-06-26 (+3d) |  |  |
| 12 | **Road Works** |  | 2027-05-20 → 2027-05-19 (-1d) |  |  |
| TAEXRDCL100003 | Subgrade Works | 2026-12-14 → 2026-12-21 (+7d) | 2026-12-19 → 2026-12-26 (+7d) |  | 43.45d → 40.15d |
| TAEXRDCL100004 | ABC aggregate Base Course Works | 2027-02-04 → 2027-01-31 (-4d) | 2027-02-09 → 2027-02-04 (-5d) |  | 2.5d → 9.1d |
| TAEXRDCL100005 | MBC1 layer | 2027-02-09 → 2027-02-04 (-5d) | 2027-02-10 → 2027-02-06 (-4d) |  | 2.5d → 9.1d |
| TAEXRDCL100006 | BBC Base Course | 2027-02-10 → 2027-02-06 (-4d) | 2027-02-13 → 2027-02-08 (-5d) |  | 2.5d → 9.1d |
| TAEXRDCL100008 | Precast Concret Kerps | 2027-02-13 → 2027-02-08 (-5d) | 2027-03-01 → 2027-02-24 (-5d) |  | 2.5d → 9.1d |
| TAEXRDCL100007 | BWC Asphalt Wearing Course with RC | 2027-04-29 → 2027-04-28 (-1d) | 2027-05-01 → 2027-04-29 (-2d) |  | 52.5d → 53.16d |
| TAEXRDCL100009 | Precast Interlock Works | 2027-05-01 → 2027-04-29 (-2d) | 2027-05-16 → 2027-05-15 (-1d) |  | 52.5d → 53.16d |
| TAEXRDCL100010 | Stone Paving works | 2027-05-16 → 2027-05-15 (-1d) | 2027-05-18 → 2027-05-17 (-1d) |  | 52.5d → 53.16d |
| TAEXRDCL100011 | Road Marking | 2027-05-18 → 2027-05-17 (-1d) | 2027-05-19 → 2027-05-18 (-1d) |  | 52.5d → 53.16d |
| TAEXRDCL100012 | Traffic Sinage | 2027-05-19 → 2027-05-18 (-1d) | 2027-05-20 → 2027-05-19 (-1d) |  | 52.5d → 53.16d |
| 25 | **Electrical Works** |  | 2027-06-23 → 2027-06-26 (+3d) |  |  |
| TAEXELCL100001 | Trench Cut off | 2027-01-04 → 2027-01-09 (+5d) | 2027-01-18 → 2027-01-23 (+5d) |  | -29.3d → -28.68d |
| TAEXELCL100002 | Drawpit and PVC Pipes Installation | 2027-04-14 → 2027-04-17 (+3d) | 2027-04-26 → 2027-04-28 (+2d) |  | 42.05d → 40.85d |
| TAEXELCL100003 | Road Crossing Ducts | 2027-04-26 → 2027-04-28 (+2d) | 2027-04-28 → 2027-05-01 (+3d) |  | 42.05d → 40.85d |
| TAEXELCL100006 | Poles RC Foundation | 2027-04-26 → 2027-04-28 (+2d) | 2027-04-29 → 2027-05-02 (+3d) |  | 53.05d → 51.85d |
| TAEXELCL100004 | Trench Backfilling | 2027-04-28 → 2027-05-01 (+3d) | 2027-05-10 → 2027-05-12 (+2d) |  | 42.05d → 40.85d |
| TAEXELCL100008 | Lighting Pole Installation with Luminares | 2027-04-29 → 2027-05-02 (+3d) | 2027-05-04 → 2027-05-06 (+2d) |  | 82.05d → 80.85d |
| TAEXELCL100005 | Cables Pulling | 2027-05-10 → 2027-05-12 (+2d) | 2027-05-12 → 2027-05-15 (+3d) |  | 42.05d → 40.85d |
| TAEXELCL100007 | Earthing cables | 2027-06-21 → 2027-06-23 (+2d) | 2027-06-23 → 2027-06-26 (+3d) |  | 8.05d → 6.85d |
| 14 | **Telecommunication Works** | 2027-02-03 → 2027-02-10 (+7d) | 2027-05-30 → 2027-06-01 (+2d) |  |  |
| TAEXTCCL100001 | Trench Cut off | 2027-02-03 → 2027-02-10 (+7d) | 2027-02-09 → 2027-02-16 (+7d) |  | -17.61d → -23.61d |
| TAEXTCCL100002 | Drawpit and PVC Pipes Installation | 2027-05-11 → 2027-05-13 (+2d) | 2027-05-16 → 2027-05-18 (+2d) |  | -20.27d → -21.47d |
| TAEXTCCL100003 | Road Crossing Ducts | 2027-05-16 → 2027-05-18 (+2d) | 2027-05-18 → 2027-05-20 (+2d) |  | 60.05d → 58.85d |
| TAEXTCCL100004 | Trench Backfilling | 2027-05-18 → 2027-05-20 (+2d) | 2027-05-30 → 2027-06-01 (+2d) |  | 60.05d → 58.85d |
| 10 | **CCTV Works** | 2026-12-02 → 2026-12-09 (+7d) | 2027-06-14 → 2027-06-21 (+7d) |  |  |
| TAEXCCCL100001 | Pipe Installation with manhole | 2026-12-02 → 2026-12-09 (+7d) | 2026-12-12 → 2026-12-19 (+7d) |  | -15.55d → -21.55d |
| TAEXCCCL100002 | CCTV Swiches Lighting panels Installation | 2027-05-16 → 2027-05-23 (+7d) | 2027-05-27 → 2027-06-03 (+7d) |  | -15.55d → -21.55d |
| TAEXCCCL100003 | Cable laying and connected with Panels | 2027-05-27 → 2027-06-03 (+7d) | 2027-06-03 → 2027-06-10 (+7d) |  | 50.45d → 44.45d |
| TAEXCCCL100004 | Pole Installation with IP Outdoor CCTV POE Camera | 2027-06-03 → 2027-06-10 (+7d) | 2027-06-14 → 2027-06-21 (+7d) |  | 50.45d → 44.45d |
| 1 | **Potable Networks** |  | 2027-03-04 → 2026-11-15 (-109d) |  |  |
| TAEXPTCL100007 | Valve Chamber works |  | 2027-02-28 → 2026-10-25 A (-126d) | 90% → 100% | 112.41d → none |
| TAEXPTCL100005 | Install Valves with fittings |  | 2027-02-20 → 2026-10-25 A (-118d) | 90% → 100% | 117.73d → none |

| ID | Task | Start | Finish | Complete | Total float |
| --- | --- | --- | --- | --- | --- |
| TAEXPTCL100006 | Install fire hydrent |  | 2027-02-27 → 2026-10-25 A (-125d) | 90% → 100% | 111.96d → none |
| TAEXPTCL100004 | Backfilling Works for Trench |  | 2026-11-17 → 2026-11-15 (-2d) | 25% → 95% | 198.16d → 200.56d |
| TAEXPTCL100008 | Inspection Test | 2027-02-28 → 2026-10-22 A (-129d) | 2027-03-04 → 2026-10-25 A (-130d) | 0% → 100% | 131.56d → none |
| 4 | **Storm Networks** |  | 2027-02-04 → 2027-01-31 (-4d) |  |  |
| TAEXSTCL100006 | Install Catch Basin with UPVC Pipes & Fittings |  | 2027-02-04 → 2027-01-31 (-4d) | 25% → 85% | 2.5d → 9.1d |
| NEWPROJ-16-1-9-4 | **AMANAH ROAD** |  | 2027-08-22 → 2027-08-16 (-6d) |  |  |
| TAEXRDCA050007 | Backfilling Works for Road | 2027-07-24 → 2027-07-18 (-6d) | 2027-08-22 → 2027-08-16 (-6d) |  | 11.84d → 16.13d |
| 10 | **ZONE 2** |  | 2027-08-30 → 2027-09-05 (+6d) |  |  |
| 1 | **Collector Road 01** |  | 2027-07-19 → 2027-07-26 (+7d) |  |  |
| 13 | **Road Works** |  | 2027-04-28 → 2027-05-01 (+3d) |  |  |
| TAEXRDCC0100011 | Road Excavation and Disposal Part 01 | 2027-01-05 → 2027-01-12 (+7d) | 2027-01-09 → 2027-01-16 (+7d) |  | 6.46d → 3.16d |
| TAEXRDCC0100021 | Backfilling Works for Road Part 01 | 2027-01-09 → 2027-01-16 (+7d) | 2027-01-12 → 2027-01-19 (+7d) |  | 6.46d → 3.16d |
| TAEXRDCC0100031 | Subgrade Works Part 01 | 2027-01-12 → 2027-01-19 (+7d) | 2027-01-27 → 2027-02-03 (+7d) |  | 6.46d → 3.16d |
| TAEXRDCC010004 | ABC aggregate Base Course Works | 2027-01-27 → 2027-02-03 (+7d) | 2027-02-17 → 2027-02-24 (+7d) |  | 6.46d → 3.16d |
| TAEXRDCC010005 | MBC1 layer | 2027-02-17 → 2027-02-24 (+7d) | 2027-02-20 → 2027-02-27 (+7d) |  | 6.46d → 3.16d |
| TAEXRDCC010006 | BBC Base Course | 2027-02-20 → 2027-02-27 (+7d) | 2027-02-24 → 2027-03-03 (+7d) |  | 6.46d → 3.16d |
| TAEXRDCC010008 | Precast Concret Kerps | 2027-03-01 → 2027-03-03 (+2d) | 2027-03-22 → 2027-03-24 (+2d) |  | 2.5d → 3.16d |
| TAEXRDCC010007 | BWC Asphalt Wearing Course with RC | 2027-03-22 → 2027-03-24 (+2d) | 2027-03-24 → 2027-03-27 (+3d) |  | 75.71d → 73.67d |
| TAEXRDCC010009 | Precast Interlock Works | 2027-03-24 → 2027-03-27 (+3d) | 2027-04-12 → 2027-04-14 (+2d) |  | 75.71d → 73.67d |
| TAEXRDCC010010 | Stone Paving works | 2027-04-12 → 2027-04-14 (+2d) | 2027-04-22 → 2027-04-25 (+3d) |  | 75.71d → 73.67d |
| TAEXRDCC010011 | Road Marking | 2027-04-22 → 2027-04-25 (+3d) | 2027-04-25 → 2027-04-27 (+2d) |  | 75.71d → 73.67d |
| TAEXRDCC010012 | Traffic Sinage | 2027-04-25 → 2027-04-27 (+2d) | 2027-04-28 → 2027-05-01 (+3d) |  | 75.71d → 73.67d |
| 11 | **Electrical Works** |  | 2027-06-26 → 2027-06-28 (+2d) |  |  |
| TAEXELCC010003 | Road Crossing Ducts |  | 2027-04-28 → 2027-04-29 (+1d) |  | 45.31d → 44.11d |
| TAEXELCC010001 | Trench Cut off | 2027-01-18 → 2027-01-23 (+5d) | 2027-02-02 → 2027-02-07 (+5d) |  | -29.3d → -28.68d |
| TAEXELCC010002 | Drawpit and PVC Pipes Installation | 2027-04-14 → 2027-04-17 (+3d) | 2027-04-26 → 2027-04-28 (+2d) |  | 45.31d → 44.11d |
| TAEXELCC010006 | Poles RC Foundation | 2027-04-26 → 2027-04-28 (+2d) | 2027-04-29 → 2027-05-02 (+3d) |  | 55.05d → 53.85d |
| TAEXELCC010004 | Trench Backfilling | 2027-04-28 → 2027-04-29 (+1d) | 2027-05-16 → 2027-05-17 (+1d) |  | 45.31d → 44.11d |
| TAEXELCC010005 | Cables Pulling | 2027-05-16 → 2027-05-17 (+1d) | 2027-05-20 → 2027-05-22 (+2d) |  | 45.31d → 44.11d |
| TAEXELCC010008 | Lighting Pole Installation with Luminares | 2027-05-20 → 2027-05-22 (+2d) | 2027-06-01 → 2027-06-02 (+1d) |  | 45.31d → 44.11d |
| TAEXELCC010007 | Earthing cables | 2027-06-23 → 2027-06-26 (+3d) | 2027-06-26 → 2027-06-28 (+2d) |  | 8.05d → 6.85d |
| 1 | **Telecommunication Works** |  | 2027-06-16 → 2027-06-17 (+1d) |  |  |
| TAEXTCCC010003 | Road Crossing Ducts |  | 2027-05-30 → 2027-05-31 (+1d) |  | 31.45d → 30.25d |
| TAEXTCCC010001 | Trench Cut off | 2027-02-09 → 2027-02-16 (+7d) | 2027-03-08 → 2027-03-15 (+7d) |  | -17.61d → -23.61d |
| TAEXTCCC010002 | Drawpit and HDPE Pipes Installation | 2027-05-16 → 2027-05-18 (+2d) | 2027-05-27 → 2027-05-30 (+3d) |  | -20.27d → -21.47d |
| TAEXTCCC010004 | Trench Backfilling | 2027-05-30 → 2027-05-31 (+1d) | 2027-06-16 → 2027-06-17 (+1d) |  | 31.45d → 30.25d |
| 2 | **CCTV Works** | 2026-12-12 → 2026-12-19 (+7d) | 2027-07-19 → 2027-07-26 (+7d) |  |  |
| TAEXCCCC010001 | Pipe Installation with manhole | 2026-12-12 → 2026-12-19 (+7d) | 2026-12-26 → 2027-01-02 (+7d) |  | -15.55d → -21.55d |
| TAEXCCCC010002 | CCTV Swiches Lighting panels Installation | 2027-05-27 → 2027-06-03 (+7d) | 2027-06-15 → 2027-06-22 (+7d) |  | -15.55d → -21.55d |
| TAEXCCCC010003 | Cable laying and connected with Panels | 2027-06-15 → 2027-06-22 (+7d) | 2027-06-29 → 2027-07-06 (+7d) |  | 20.45d → 14.45d |
| TAEXCCCC010004 | Pole Installation with IP Outdoor CCTV POE Camera | 2027-06-29 → 2027-07-06 (+7d) | 2027-07-19 → 2027-07-26 (+7d) |  | 20.45d → 14.45d |
| 3 | **Potable Networks** |  | 2027-03-23 → 2027-03-29 (+6d) |  |  |
| TAEXPTCC010002 | Bedding Works |  | 2026-11-07 → 2026-11-14 (+7d) |  | 6.46d → 3.16d |
| TAEXPTCC010003 | Install Pipes & Fittings |  | 2026-11-18 → 2026-11-25 (+7d) |  | 6.46d → 3.16d |
| TAEXPTCC010004 | Backfilling Works for Trench |  | 2026-12-01 → 2026-12-08 (+7d) |  | 8.78d → 5.48d |
| TAEXPTCC010007 | Valve Chamber works |  | 2027-03-18 → 2027-03-24 (+6d) |  | 111.96d → 106.56d |
| TAEXPTCC010005 | Install Valves with fittings |  | 2027-02-10 → 2027-02-17 (+7d) |  | 117.73d → 112.13d |
| TAEXPTCC0100011 | Excavation works for Trench Part 01 | 2026-10-24 → 2026-10-31 (+7d) | 2026-11-04 → 2026-11-11 (+7d) |  | 6.46d → 3.16d |
| TAEXPTCC010006 | Install fire hydrent | 2027-02-04 → 2027-02-11 (+7d) | 2027-02-13 → 2027-02-20 (+7d) |  | 84.06d → 78.06d |
| TAEXPTCC010008 | Inspection Test | 2027-03-18 → 2027-03-24 (+6d) | 2027-03-23 → 2027-03-29 (+6d) |  | 111.96d → 106.56d |
| 4 | **TSE Networks** |  | 2027-03-28 → 2027-04-03 (+6d) |  |  |
| TAEXTSCC010001 | Excavation works for Trench |  | 2026-11-14 → 2026-11-21 (+7d) |  | 8.34d → 5.04d |
| TAEXTSCC010005 | Install Valves with fittings |  | 2026-12-23 → 2026-12-30 (+7d) |  | 6.46d → 3.16d |
| TAEXTSCC010006 | Valve Chamber works |  | 2027-01-05 → 2027-01-12 (+7d) |  | 6.46d → 3.16d |
| TAEXTSCC010002 | Bedding Works | 2026-11-14 → 2026-11-21 (+7d) | 2026-11-16 → 2026-11-23 (+7d) |  | 8.34d → 5.04d |
| TAEXTSCC010003 | Install Pipes & Fittings | 2026-11-18 → 2026-11-25 (+7d) | 2026-12-05 → 2026-12-12 (+7d) |  | 6.46d → 3.16d |
| TAEXTSCC010004 | Backfilling Works for Trench | 2026-12-05 → 2026-12-12 (+7d) | 2026-12-23 → 2026-12-30 (+7d) |  | 6.46d → 3.16d |
| TAEXTSCC010007 | Inspection Test | 2027-03-23 → 2027-03-29 (+6d) | 2027-03-28 → 2027-04-03 (+6d) |  | 111.96d → 106.56d |
| 5 | **Sewerage Networks** |  | 2026-12-17 → 2026-12-16 (-1d) |  |  |
| TAEXSWCC0100011 | Excavation works for Trench Part 01 |  | 2026-10-27 → 2026-11-03 (+7d) | 90% → 98% | 131.68d → 139.63d |
| TAEXSWCC010005 | Manhole Installation with backfilling |  | 2026-12-13 → 2026-12-15 (+2d) | 60% → 85% | 186.5d → 187.5d |
| TAEXSWCC0100021 | Bedding Works Part 01 |  | 2026-10-28 → 2026-11-03 (+6d) | 80% → 95% | 191.65d → 192.6d |
| TAEXSWCC0100031 | Install GRP Pipes & Fittings Part 01 |  | 2026-10-29 → 2026-11-03 (+5d) | 80% → 95% | 191.65d → 192.6d |
| TAEXSWCC010006 | Leakage Test |  | 2026-12-17 → 2026-12-16 (-1d) | 15% → 85% | 186.5d → 187.5d |
| TAEXSWCC0100041 | Backfilling Works for Trench Part 01 | 2026-11-16 → 2026-10-22 A (-25d) | 2026-11-25 → 2026-11-28 (+3d) | 0% → 25% | 191.65d → 192.6d |
| 6 | **Storm Networks** |  | 2027-01-04 → 2027-01-10 (+6d) |  |  |
| TAEXSTCC0100051 | Manhole Installation with backfilling Part 01 |  | 2026-12-17 → 2026-12-24 (+7d) |  | 28.95d → 26.65d |
| TAEXSTCC0100091 | Install Box Culvert Part 2 Part 01 |  | 2026-12-20 → 2026-12-26 (+6d) | 85% → 95% | 28.95d → 26.65d |
| TAEXSTCC010006 | Install Catch Basin with UPVC Pipes & Fittings |  | 2026-12-31 → 2027-01-06 (+6d) |  | 28.95d → 26.65d |
| TAEXSTCC0100041 | Backfilling Works for Trench & Box Culvert Part 01 | 2026-10-19 → 2026-10-26 (+7d) | 2026-10-27 → 2026-11-03 (+7d) |  | 72.49d → 70.19d |

| ID | Task | Start | Finish | Complete | Total float |
| --- | --- | --- | --- | --- | --- |
| TAEXSTCC010007 | Leakage Test | 2026-12-31 → 2027-01-06 (+6d) | 2027-01-04 → 2027-01-10 (+6d) |  | 182.16d → 177.16d |
| 11 | **Upgrade Local 28** |  | 2027-07-27 → 2027-08-03 (+7d) |  |  |
| 24 | **Road Works** | 2027-03-22 → 2027-03-24 (+2d) | 2027-05-20 → 2027-05-23 (+3d) |  |  |
| TAEXRDCU280002 | Precast Concret Kerps | 2027-03-22 → 2027-03-24 (+2d) | 2027-04-08 → 2027-04-11 (+3d) |  | 2.5d → 3.16d |
| TAEXRDCU280001 | BWC Asphalt Wearing Course with RC | 2027-04-26 → 2027-04-28 (+2d) | 2027-04-27 → 2027-04-29 (+2d) |  | 56.71d → 54.67d |
| TAEXRDCU280003 | Precast Interlock Works | 2027-04-27 → 2027-04-29 (+2d) | 2027-05-12 → 2027-05-15 (+3d) |  | 56.71d → 54.67d |
| TAEXRDCU280004 | Stone Paving works | 2027-05-12 → 2027-05-15 (+3d) | 2027-05-17 → 2027-05-19 (+2d) |  | 56.71d → 54.67d |
| TAEXRDCU280005 | Road Marking | 2027-05-17 → 2027-05-19 (+2d) | 2027-05-18 → 2027-05-20 (+2d) |  | 56.71d → 54.67d |
| TAEXRDCU280006 | Traffic Sinage | 2027-05-18 → 2027-05-20 (+2d) | 2027-05-20 → 2027-05-23 (+3d) |  | 56.71d → 54.67d |
| 15 | **Electrical Works** | 2027-02-02 → 2027-02-07 (+5d) | 2027-06-30 → 2027-07-03 (+3d) |  |  |
| TAEXELCU280001 | Trench Cut off | 2027-02-02 → 2027-02-07 (+5d) | 2027-02-14 → 2027-02-18 (+4d) |  | -29.3d → -28.68d |
| TAEXELCU280002 | Drawpit and PVC Pipes Installation | 2027-04-14 → 2027-04-17 (+3d) | 2027-04-27 → 2027-04-29 (+2d) |  | 31.05d → 29.85d |
| TAEXELCU280003 | Road Crossing Ducts | 2027-04-27 → 2027-04-29 (+2d) | 2027-05-02 → 2027-05-04 (+2d) |  | 34.05d → 32.85d |
| TAEXELCU280004 | Trench Backfilling | 2027-05-02 → 2027-05-04 (+2d) | 2027-05-22 → 2027-05-24 (+2d) |  | 34.05d → 32.85d |
| TAEXELCU280005 | Cables Pulling | 2027-05-22 → 2027-05-24 (+2d) | 2027-05-26 → 2027-05-29 (+3d) |  | 34.05d → 32.85d |
| TAEXELCU280006 | Poles RC Foundation | 2027-05-23 → 2027-05-25 (+2d) | 2027-05-30 → 2027-06-01 (+2d) |  | 31.05d → 29.85d |
| TAEXELCU280008 | Lighting Pole Installation with Luminares | 2027-05-30 → 2027-06-01 (+2d) | 2027-06-08 → 2027-06-10 (+2d) |  | 39.05d → 37.85d |
| TAEXELCU280007 | Earthing cables | 2027-06-26 → 2027-06-28 (+2d) | 2027-06-30 → 2027-07-03 (+3d) |  | 8.05d → 6.85d |
| 1 | **Telecommunication Works** | 2027-03-08 → 2027-03-15 (+7d) | 2027-06-26 → 2027-06-28 (+2d) |  |  |
| TAEXTCCU280001 | Trench Cut off | 2027-03-08 → 2027-03-15 (+7d) | 2027-03-20 → 2027-03-27 (+7d) |  | -17.61d → -23.61d |
| TAEXTCCU280002 | Drawpit and PVC Pipes Installation | 2027-05-27 → 2027-05-30 (+3d) | 2027-06-06 → 2027-06-08 (+2d) |  | -20.27d → -21.47d |
| TAEXTCCU280003 | Road Crossing Ducts | 2027-06-06 → 2027-06-08 (+2d) | 2027-06-10 → 2027-06-13 (+3d) |  | 23.05d → 21.85d |
| TAEXTCCU280004 | Trench Backfilling | 2027-06-10 → 2027-06-13 (+3d) | 2027-06-26 → 2027-06-28 (+2d) |  | 23.05d → 21.85d |
| 2 | **CCTV Works** | 2026-12-26 → 2027-01-02 (+7d) | 2027-07-27 → 2027-08-03 (+7d) |  |  |
| TAEXCCCU280001 | Pipe Installation with manhole | 2026-12-26 → 2027-01-02 (+7d) | 2027-01-09 → 2027-01-16 (+7d) |  | -15.55d → -21.55d |
| TAEXCCCU280002 | CCTV Swiches Lighting panels Installation | 2027-06-15 → 2027-06-22 (+7d) | 2027-07-01 → 2027-07-08 (+7d) |  | -15.55d → -21.55d |
| TAEXCCCU280003 | Cable laying and connected with Panels | 2027-07-01 → 2027-07-08 (+7d) | 2027-07-13 → 2027-07-20 (+7d) |  | 13.45d → 7.45d |
| TAEXCCCU280004 | Pole Installation with IP Outdoor CCTV POE Camera | 2027-07-13 → 2027-07-20 (+7d) | 2027-07-27 → 2027-08-03 (+7d) |  | 13.45d → 7.45d |
| 3 | **Potable Networks** |  | 2027-03-22 → 2027-03-27 (+5d) |  |  |
| TAEXPTCU280001 | Excavation works for Trench |  | 2026-11-09 → 2026-11-16 (+7d) |  | 62.04d → 56.04d |
| TAEXPTCU280002 | Bedding Works |  | 2026-11-09 → 2026-11-16 (+7d) |  | 186.79d → 180.79d |
| TAEXPTCU280003 | Install Pipes & Fittings |  | 2026-11-10 → 2026-11-17 (+7d) |  | 186.79d → 180.79d |
| TAEXPTCU280004 | Backfilling Works for Trench | 2026-11-10 → 2026-11-17 (+7d) | 2026-11-26 → 2026-12-03 (+7d) |  | 186.79d → 180.79d |
| TAEXPTCU280005 | Install Valves with fittings | 2026-11-22 → 2026-11-29 (+7d) | 2026-11-26 → 2026-12-03 (+7d) |  | 186.79d → 180.79d |
| TAEXPTCU280006 | Install fire hydrent | 2026-11-26 → 2026-12-03 (+7d) | 2026-12-03 → 2026-12-10 (+7d) |  | 186.79d → 180.79d |
| TAEXPTCU280007 | Valve Chamber works | 2027-02-28 → 2027-03-04 (+4d) | 2027-03-17 → 2027-03-22 (+5d) |  | 112.41d → 108.41d |
| TAEXPTCU280008 | Inspection Test | 2027-03-17 → 2027-03-22 (+5d) | 2027-03-22 → 2027-03-27 (+5d) |  | 112.41d → 108.41d |
| 4 | **TSE Networks** |  | 2027-03-27 → 2027-03-31 (+4d) |  |  |
| TAEXTSCU280005 | Install Valves with fittings |  | 2027-01-13 → 2027-01-20 (+7d) |  | 158.02d → 152.02d |
| TAEXTSCU280006 | Valve Chamber works |  | 2027-01-27 → 2027-02-03 (+7d) |  | 158.02d → 152.02d |
| TAEXTSCU280001 | Excavation works for Trench | 2026-11-21 → 2026-11-28 (+7d) | 2026-12-16 → 2026-12-23 (+7d) |  | 51.42d → 45.42d |
| TAEXTSCU280002 | Bedding Works | 2026-12-16 → 2026-12-23 (+7d) | 2026-12-19 → 2026-12-26 (+7d) |  | 158.02d → 152.02d |
| TAEXTSCU280003 | Install Pipes & Fittings | 2026-12-19 → 2026-12-26 (+7d) | 2026-12-28 → 2027-01-04 (+7d) |  | 158.02d → 152.02d |
| TAEXTSCU280004 | Backfilling Works for Trench | 2026-12-28 → 2027-01-04 (+7d) | 2027-01-13 → 2027-01-20 (+7d) |  | 158.02d → 152.02d |
| TAEXTSCU280007 | Inspection Test | 2027-03-22 → 2027-03-27 (+5d) | 2027-03-27 → 2027-03-31 (+4d) |  | 112.41d → 108.41d |
| 19 | **Storm Networks** |  | 2027-03-27 → 2027-03-31 (+4d) |  |  |
| TAEXSTCU280007 | Leakage Test |  | 2027-03-27 → 2027-03-31 (+4d) |  | 112.41d → 108.41d |
| TAEXSTCU21001011 | Manhole Installation with backfilling Part 01 | 2026-12-12 → 2026-10-22 A (-51d) | 2026-12-17 → 2026-10-25 A (-53d) | 0% → 100% | 2.5d → none |
| TAEXSTCU280006 | Install Catch Basin with UPVC Pipes & Fittings | 2026-12-17 → 2026-12-19 (+2d) | 2026-12-31 → 2027-01-02 (+2d) |  | 2.5d → 9.6d |
| 5 | **Local Road 02** |  | 2027-08-15 → 2027-08-22 (+7d) |  |  |
| 2 | **Road Works** |  | 2027-07-24 → 2027-07-18 (-6d) |  |  |
| TAEXRDC L020008 | Precast Concret Kerps |  | 2027-04-15 → 2027-04-18 (+3d) |  | 2.5d → 3.16d |
| TAEXRDC L020007 | BWC Asphalt Wearing Course with RC | 2027-05-29 → 2027-05-23 (-6d) | 2027-05-30 → 2027-05-24 (-6d) |  | 26.9d → 31.19d |
| TAEXRDC L020009 | Precast Interlock Works | 2027-05-30 → 2027-05-24 (-6d) | 2027-06-09 → 2027-06-03 (-6d) |  | 30.9d → 35.19d |
| TAEXRDC L020010 | Stone Paving works | 2027-06-09 → 2027-06-03 (-6d) | 2027-06-14 → 2027-06-08 (-6d) |  | 30.9d → 35.19d |
| TAEXRDC L020011 | Road Marking | 2027-07-18 → 2027-07-12 (-6d) | 2027-07-21 → 2027-07-15 (-6d) |  | 1.84d → 6.13d |
| TAEXRDC L020012 | Traffic Sinage | 2027-07-21 → 2027-07-15 (-6d) | 2027-07-24 → 2027-07-18 (-6d) |  | 1.84d → 6.13d |
| 1 | **Electrical Works** |  | 2027-07-03 → 2027-07-05 (+2d) |  |  |
| TAEXELCL020001 | Trench Cut off |  | 2027-02-20 → 2027-02-25 (+5d) |  | -29.3d → -28.68d |
| TAEXELCL020004 | Trench Backfilling |  | 2027-04-22 → 2027-04-25 (+3d) |  | 65.41d → 64.21d |
| TAEXELCL020005 | Cables Pulling |  | 2027-04-25 → 2027-04-26 (+1d) |  | 65.41d → 64.21d |
| TAEXELCL020006 | Poles RC Foundation | 2027-04-14 → 2027-04-17 (+3d) | 2027-04-18 → 2027-04-20 (+2d) |  | 71.05d → 69.85d |
| TAEXELCL020008 | Lighting Pole Installation with Luminares | 2027-04-18 → 2027-04-20 (+2d) | 2027-04-22 → 2027-04-25 (+3d) |  | 79.05d → 77.85d |
| TAEXELCL020007 | Earthing cables | 2027-06-30 → 2027-07-03 (+3d) | 2027-07-03 → 2027-07-05 (+2d) |  | 8.05d → 6.85d |
| 5 | **Telecommunication Works** |  | 2027-06-16 → 2027-06-19 (+3d) |  |  |
| TAEXTCCL020001 | Trench Cut off |  | 2027-03-27 → 2027-04-03 (+7d) |  | -17.61d → -23.61d |
| TAEXTCCL020004 | Trench Backfilling | 2027-06-06 → 2027-06-08 (+2d) | 2027-06-16 → 2027-06-19 (+3d) |  | 31.05d → 29.85d |
| 3 | **CCTV Works** | 2027-01-09 → 2027-01-16 (+7d) | 2027-08-15 → 2027-08-22 (+7d) |  |  |
| TAEXCCCL020001 | Pipe Installation with manhole | 2027-01-09 → 2027-01-16 (+7d) | 2027-01-20 → 2027-01-27 (+7d) |  | -15.55d → -21.55d |
| TAEXCCCL020002 | CCTV Swiches Lighting panels Installation | 2027-07-01 → 2027-07-08 (+7d) | 2027-07-17 → 2027-07-24 (+7d) |  | -15.55d → -21.55d |

| ID | Task | Start | Finish | Complete | Total float |
| --- | --- | --- | --- | --- | --- |
| TAEXCCCL020003 | Cable laying and connected with Panels | 2027-07-17 → 2027-07-24 (+7d) | 2027-07-28 → 2027-08-04 (+7d) |  | -2.55d → -8.55d |
| TAEXCCCL020004 | Pole Installation with IP Outdoor CCTV POE Camera | 2027-07-28 → 2027-08-04 (+7d) | 2027-08-15 → 2027-08-22 (+7d) |  | -2.55d → -8.55d |
| 20 | **Storm Networks** |  | 2027-02-06 → 2026-10-25 (-104d) |  |  |
| TAEXSTCL020007 | Leakage Test |  | 2027-02-06 → 2026-10-25 A (-104d) | 95% → 100% | 154.26d → none |
| 7 | **Local Road 03** |  | 2027-08-29 → 2027-09-04 (+6d) |  |  |
| TAEXRDCL0300021 | Backfilling Works for Road Part 01 |  | 2026-12-14 → 2026-12-21 (+7d) |  | 43.45d → 40.15d |
| TAEXRDCL030008 | Precast Concret Kerps |  |  | 40% → 70% | 2.5d → 3.16d |
| 1 | **Electrical Works** |  | 2027-07-05 → 2027-07-07 (+2d) |  |  |
| TAEXELCL030002 | Drawpit and PVC Pipes Installation |  | 2027-04-17 → 2027-04-19 (+2d) |  | 66.4d → 65.2d |
| TAEXELCL030003 | Road Crossing Ducts |  | 2027-04-18 → 2027-04-19 (+1d) |  | 66.4d → 65.2d |
| TAEXELCL030001 | Trench Cut off |  | 2027-02-27 → 2027-03-03 (+4d) |  | -29.3d → -28.68d |
| TAEXELCL030005 | Cables Pulling |  | 2027-04-26 → 2027-04-27 (+1d) |  | 66.4d → 65.2d |
| TAEXELCL030004 | Trench Backfilling |  | 2027-04-24 → 2027-04-25 (+1d) |  | 66.4d → 65.2d |
| TAEXELCL030006 | Poles RC Foundation | 2027-04-17 → 2027-04-19 (+2d) | 2027-04-20 → 2027-04-22 (+2d) |  | 71.05d → 69.85d |
| TAEXELCL030008 | Lighting Pole Installation with Luminares | 2027-04-20 → 2027-04-22 (+2d) | 2027-04-26 → 2027-04-28 (+2d) |  | 76.05d → 74.85d |
| TAEXELCL030007 | Earthing cables | 2027-07-03 → 2027-07-05 (+2d) | 2027-07-05 → 2027-07-07 (+2d) |  | 8.05d → 6.85d |
| 3 | **Telecommunication Works** |  | 2027-06-20 → 2027-06-22 (+2d) |  |  |
| TAEXTCCL030002 | Drawpit and PVC Pipes Installation |  | 2027-06-08 → 2027-06-09 (+1d) |  | -20.27d → -21.47d |
| TAEXTCCL030003 | Road Crossing Ducts |  | 2027-06-08 → 2027-06-10 (+2d) |  | 28.07d → 26.87d |
| TAEXTCCL030001 | Trench Cut off | 2027-03-27 → 2027-04-03 (+7d) | 2027-04-04 → 2027-04-11 (+7d) |  | -17.61d → -23.61d |
| TAEXTCCL030004 | Trench Backfilling | 2027-06-08 → 2027-06-10 (+2d) | 2027-06-20 → 2027-06-22 (+2d) |  | 28.07d → 26.87d |
| 4 | **CCTV Works** | 2027-01-20 → 2027-01-27 (+7d) | 2027-08-29 → 2027-09-04 (+6d) |  |  |
| TAEXCCCL030001 | Pipe Installation with manhole | 2027-01-20 → 2027-01-27 (+7d) | 2027-02-02 → 2027-02-09 (+7d) |  | -15.55d → -21.55d |
| TAEXCCCL030002 | CCTV Swiches Lighting panels Installation | 2027-07-17 → 2027-07-24 (+7d) | 2027-08-01 → 2027-08-08 (+7d) |  | -15.55d → -21.55d |
| TAEXCCCL030003 | Cable laying and connected with Panels | 2027-08-01 → 2027-08-08 (+7d) | 2027-08-12 → 2027-08-19 (+7d) |  | -14.55d → -20.55d |
| TAEXCCCL030004 | Pole Installation with IP Outdoor CCTV POE Camera | 2027-08-12 → 2027-08-19 (+7d) | 2027-08-29 → 2027-09-04 (+6d) |  | -14.55d → -20.55d |
| 9 | **Local Road 04** |  | 2027-08-25 → 2027-09-01 (+7d) |  |  |
| 2 | **Road Works** |  | 2027-06-12 → 2027-06-09 (-3d) |  |  |
| TAEXRDCL040008 | Precast Concret Kerps |  | 2027-04-24 → 2026-10-25 A (-181d) | 90% → 100% | 2.5d → none |
| TAEXRDCL040007 | BWC Asphalt Wearing Course with RC | 2027-04-24 → 2027-04-21 (-3d) | 2027-05-17 → 2027-05-15 (-2d) |  | 37.5d → 39.76d |
| TAEXRDCL040009 | Precast Interlock Works | 2027-05-17 → 2027-05-15 (-2d) | 2027-05-31 → 2027-05-29 (-2d) |  | 37.5d → 39.76d |
| TAEXRDCL040010 | Stone Paving works | 2027-05-31 → 2027-05-29 (-2d) | 2027-06-08 → 2027-06-06 (-2d) |  | 37.5d → 39.76d |
| TAEXRDCL040011 | Road Marking | 2027-06-08 → 2027-06-06 (-2d) | 2027-06-09 → 2027-06-07 (-2d) |  | 37.5d → 39.76d |
| TAEXRDCL040012 | Traffic Sinage | 2027-06-09 → 2027-06-07 (-2d) | 2027-06-12 → 2027-06-09 (-3d) |  | 37.5d → 39.76d |
| 1 | **Electrical Works** |  | 2027-07-07 → 2027-07-10 (+3d) |  |  |
| TAEXELCL040001 | Trench Cut off |  | 2027-03-13 → 2027-03-15 (+2d) | 10% → 30% | -29.3d → -28.68d |
| TAEXELCL040002 | Drawpit and PVC Pipes Installation |  | 2027-04-18 → 2027-04-19 (+1d) |  | 61.75d → 60.55d |
| TAEXELCL040003 | Road Crossing Ducts |  | 2027-04-19 → 2027-04-20 (+1d) |  | 61.75d → 60.55d |
| TAEXELCL040006 | Poles RC Foundation | 2027-04-18 → 2026-10-25 A (-175d) | 2027-04-21 → 2027-04-22 (+1d) | 0% → 18% | 72.41d → 71.75d |
| TAEXELCL040004 | Trench Backfilling | 2027-04-19 → 2027-04-20 (+1d) | 2027-05-01 → 2027-05-02 (+1d) |  | 61.75d → 60.55d |
| TAEXELCL040008 | Lighting Pole Installation with Luminares | 2027-04-21 → 2027-04-22 (+1d) | 2027-04-27 → 2027-04-28 (+1d) |  | 75.41d → 74.75d |
| TAEXELCL040005 | Cables Pulling | 2027-05-01 → 2027-05-02 (+1d) | 2027-05-04 → 2027-05-05 (+1d) |  | 61.75d → 60.55d |
| TAEXELCL040009 | Install Substation & RMU | 2027-05-04 → 2027-05-05 (+1d) | 2027-05-15 → 2027-05-16 (+1d) |  | 74.75d → 73.55d |
| TAEXELCL040007 | Earthing cables | 2027-07-05 → 2027-07-07 (+2d) | 2027-07-07 → 2027-07-10 (+3d) |  | 8.05d → 6.85d |
| 3 | **Telecommunication Works** |  | 2027-06-20 → 2027-06-21 (+1d) |  |  |
| TAEXTCCL040001 | Trench Cut off |  | 2027-04-11 → 2027-04-18 (+7d) |  | -17.61d → -23.61d |
| TAEXTCCL040004 | Trench Backfilling | 2027-06-08 → 2027-06-09 (+1d) | 2027-06-20 → 2027-06-21 (+1d) |  | 28.73d → 27.53d |
| 4 | **CCTV Works** | 2027-02-02 → 2027-02-09 (+7d) | 2027-08-25 → 2027-09-01 (+7d) |  |  |
| TAEXCCCL040001 | Pipe Installation with manhole | 2027-02-02 → 2027-02-09 (+7d) | 2027-02-14 → 2027-02-21 (+7d) |  | -15.55d → -21.55d |
| TAEXCCCL040002 | CCTV Swiches Lighting panels Installation | 2027-07-17 → 2027-07-24 (+7d) | 2027-07-28 → 2027-08-04 (+7d) |  | -15.55d → -21.55d |
| TAEXCCCL040003 | Cable laying and connected with Panels | 2027-07-28 → 2027-08-04 (+7d) | 2027-08-09 → 2027-08-16 (+7d) |  | -11.55d → -17.55d |
| TAEXCCCL040004 | Pole Installation with IP Outdoor CCTV POE Camera | 2027-08-09 → 2027-08-16 (+7d) | 2027-08-25 → 2027-09-01 (+7d) |  | -11.55d → -17.55d |
| 2 | **Local Road 05** |  | 2027-08-30 → 2027-09-05 (+6d) |  |  |
| 3 | **Road Works** |  | 2027-06-24 → 2027-06-19 (-5d) |  |  |
| TAEXRDCL050008 | Precast Concret Kerps |  | 2026-12-13 → 2026-12-19 (+6d) | 95% → 99% | 143.61d → 138.29d |
| TAEXRDCL050007 | BWC Asphalt Wearing Course with RC | 2027-05-30 → 2027-05-24 (-6d) | 2027-05-31 → 2027-05-25 (-6d) |  | 26.9d → 31.19d |
| TAEXRDCL050009 | Precast Interlock Works | 2027-05-31 → 2027-05-25 (-6d) | 2027-06-17 → 2027-06-12 (-5d) |  | 26.9d → 31.19d |
| TAEXRDCL050010 | Stone Paving works | 2027-06-17 → 2027-06-12 (-5d) | 2027-06-21 → 2027-06-15 (-6d) |  | 26.9d → 31.19d |
| TAEXRDCL050011 | Road Marking | 2027-06-21 → 2027-06-15 (-6d) | 2027-06-22 → 2027-06-16 (-6d) |  | 26.9d → 31.19d |
| TAEXRDCL050012 | Traffic Sinage | 2027-06-22 → 2027-06-16 (-6d) | 2027-06-24 → 2027-06-19 (-5d) |  | 26.9d → 31.19d |
| 1 | **Electrical Works** |  | 2027-07-10 → 2027-07-12 (+2d) |  |  |
| TAEXELCL050001 | Trench Cut off |  | 2027-03-25 → 2027-03-24 (-1d) | 10% → 30% | -29.3d → -28.68d |
| TAEXELCL050004 | Trench Backfilling | 2027-04-14 → 2027-04-17 (+3d) | 2027-04-26 → 2027-04-28 (+2d) |  | 67.05d → 65.85d |
| TAEXELCL050006 | Poles RC Foundation | 2027-04-14 → 2027-04-17 (+3d) | 2027-04-18 → 2027-04-20 (+2d) |  | 48.05d → 46.85d |
| TAEXELCL050008 | Lighting Pole Installation with Luminares | 2027-04-18 → 2027-04-20 (+2d) | 2027-04-24 → 2027-04-26 (+2d) |  | 48.05d → 46.85d |
| TAEXELCL050005 | Cables Pulling | 2027-04-26 → 2027-04-28 (+2d) | 2027-04-29 → 2027-05-02 (+3d) |  | 67.05d → 65.85d |
| TAEXELCL050007 | Earthing cables | 2027-07-07 → 2027-07-10 (+3d) | 2027-07-10 → 2027-07-12 (+2d) |  | 8.05d → 6.85d |
| 2 | **Telecommunication Works** |  | 2027-06-20 → 2027-06-21 (+1d) |  |  |
| TAEXTCCL050001 | Trench Cut off |  | 2027-04-19 → 2027-04-26 (+7d) |  | -17.61d → -23.61d |
| TAEXTCCL050004 | Trench Backfilling | 2027-06-08 → 2027-06-09 (+1d) | 2027-06-20 → 2027-06-21 (+1d) |  | 21.73d → 20.53d |

| ID | Task | Start | Finish | Total float |
| --- | --- | --- | --- | --- |
| 4 | **CCTV Works** | 2027-02-14 → 2027-02-21 (+7d) | 2027-08-30 → 2027-09-05 (+6d) |  |
| TAEXCCCL050001 | Pipe Installation with manhole | 2027-02-14 → 2027-02-21 (+7d) | 2027-02-25 → 2027-03-04 (+7d) | -15.55d → -21.55d |
| TAEXCCCL050002 | CCTV Swiches Lighting panels Installation | 2027-07-28 → 2027-08-04 (+7d) | 2027-08-09 → 2027-08-16 (+7d) | -15.55d → -21.55d |
| TAEXCCCL050003 | Cable laying and connected with Panels | 2027-08-09 → 2027-08-16 (+7d) | 2027-08-21 → 2027-08-28 (+7d) | -15.55d → -21.55d |
| TAEXCCCL050004 | Pole Installation with IP Outdoor CCTV POE Camera | 2027-08-21 → 2027-08-28 (+7d) | 2027-08-30 → 2027-09-05 (+6d) | -15.55d → -21.55d |
| 12 | **Road Works** |  | 2027-06-15 → 2027-06-14 (-1d) |  |
| TAEXRDCL010004 | ABC aggregate Base Course Works |  | 2027-02-18 → 2027-02-25 (+7d) | 54.79d → 48.79d |
| TAEXRDCL010005 | MBC1 layer |  | 2027-02-20 → 2027-02-27 (+7d) | 54.79d → 48.79d |
| TAEXRDCL010006 | BBC Base Course |  | 2027-02-20 → 2027-02-27 (+7d) | 54.79d → 48.79d |
| TAEXRDCL010008 | Precast Concret Kerps |  | 2027-04-28 → 2027-04-27 (-1d) | 2.5d → 3.16d |
| TAEXRDCL010007 | BWC Asphalt Wearing Course with RC | 2027-04-28 → 2027-04-27 (-1d) | 2027-04-29 → 2027-04-28 (-1d) | 41.5d → 42.16d |
| TAEXRDCL010009 | Precast Interlock Works | 2027-05-20 → 2027-05-19 (-1d) | 2027-06-07 → 2027-06-06 (-1d) | 41.5d → 42.16d |
| TAEXRDCL010010 | Stone Paving works | 2027-06-07 → 2027-06-06 (-1d) | 2027-06-12 → 2027-06-10 (-2d) | 41.5d → 42.16d |
| TAEXRDCL010011 | Road Marking | 2027-06-12 → 2027-06-10 (-2d) | 2027-06-13 → 2027-06-12 (-1d) | 41.5d → 42.16d |
| TAEXRDCL010012 | Traffic Sinage | 2027-06-13 → 2027-06-12 (-1d) | 2027-06-15 → 2027-06-14 (-1d) | 41.5d → 42.16d |
| TAEXELCL010001 | Trench Cut off | 2027-05-04 → 2027-05-03 (-1d) | 2027-05-18 → 2027-05-17 (-1d) | -29.3d → -28.68d |
| 2 | **Telecommunication Works** | 2027-05-12 → 2027-05-19 (+7d) | 2027-06-27 → 2027-06-28 (+1d) |  |
| TAEXTCCL010001 | Trench Cut off | 2027-05-12 → 2027-05-19 (+7d) | 2027-05-20 → 2027-05-27 (+7d) | -17.61d → -23.61d |
| TAEXTCCL010002 | Drawpit and PVC Pipes Installation | 2027-06-08 → 2027-06-09 (+1d) | 2027-06-13 → 2027-06-14 (+1d) | -20.27d → -21.47d |
| TAEXTCCL010003 | Road Crossing Ducts | 2027-06-13 → 2027-06-14 (+1d) | 2027-06-15 → 2027-06-16 (+1d) | 29.73d → 28.53d |
| TAEXTCCL010004 | Trench Backfilling | 2027-06-15 → 2027-06-16 (+1d) | 2027-06-27 → 2027-06-28 (+1d) | 29.73d → 28.53d |
| 16 | **CCTV Works** | 2027-04-24 → 2027-05-01 (+7d) | 2027-06-21 → 2027-06-28 (+7d) |  |
| TAEXCCCL010001 | Pipe Installation with manhole | 2027-04-24 → 2027-05-01 (+7d) | 2027-05-08 → 2027-05-15 (+7d) | -14.55d → -20.55d |
| TAEXCCCL010002 | CCTV Swiches Lighting panels Installation | 2027-05-08 → 2027-05-15 (+7d) | 2027-05-23 → 2027-05-30 (+7d) | 44.45d → 38.45d |
| TAEXCCCL010003 | Cable laying and connected with Panels | 2027-05-23 → 2027-05-30 (+7d) | 2027-06-03 → 2027-06-10 (+7d) | 44.45d → 38.45d |
| TAEXCCCL010004 | Pole Installation with IP Outdoor CCTV POE Camera | 2027-06-03 → 2027-06-10 (+7d) | 2027-06-21 → 2027-06-28 (+7d) | 44.45d → 38.45d |
| 17 | **Potable Networks** |  | 2027-03-21 → 2027-03-28 (+7d) |  |
| TAEXPTCL010002 | Bedding Works |  | 2026-10-24 → 2026-10-31 (+7d) | 75.22d → 71.92d |
| TAEXPTCL010003 | Install Pipes & Fittings |  | 2027-01-17 → 2027-01-24 (+7d) | 84.06d → 78.06d |
| TAEXPTCL010004 | Backfilling Works for Trench |  | 2027-01-19 → 2027-01-26 (+7d) | 122.64d → 117.04d |
| TAEXPTCL0100011 | Excavation works for Trench Part 01 |  | 2026-10-19 → 2026-10-26 (+7d) | 6.46d → 3.16d |
| TAEXPTCL010007 | Valve Chamber works |  | 2027-03-17 → 2027-03-24 (+7d) | 62.04d → 56.04d |
| TAEXPTCL010005 | Install Valves with fittings |  | 2027-01-21 → 2027-01-28 (+7d) | 122.64d → 117.04d |
| TAEXPTCL010006 | Install fire hydrent |  | 2027-01-17 → 2027-01-24 (+7d) | 89.04d → 83.04d |
| TAEXPTCL010008 | Inspection Test |  | 2027-03-21 → 2027-03-28 (+7d) | 117.44d → 111.44d |
| 3 | **TSE Networks** |  | 2027-05-06 → 2027-05-13 (+7d) |  |
| TAEXTSCL010002 | Bedding Works |  | 2026-10-24 → 2026-10-31 (+7d) | 75.22d → 71.92d |
| TAEXTSCL010003 | Install Pipes & Fittings |  | 2027-04-27 → 2027-05-04 (+7d) | 55.54d → 49.54d |
| TAEXTSCL010004 | Backfilling Works for Trench |  | 2027-05-03 → 2027-05-10 (+7d) | 55.54d → 49.54d |
| TAEXTSCL0100011 | Excavation works for Trench Part 01 |  | 2026-10-22 → 2026-10-29 (+7d) | 8.34d → 5.04d |
| TAEXTSCL010006 | Valve Chamber works |  | 2027-05-04 → 2027-05-11 (+7d) | 87.95d → 81.95d |
| TAEXTSCL010005 | Install Valves with fittings |  | 2027-05-03 → 2027-05-10 (+7d) | 55.54d → 49.54d |
| TAEXTSCL010007 | Inspection Test |  | 2027-05-06 → 2027-05-13 (+7d) | 87.95d → 81.95d |
| 13 | **Sewerage Networks** |  | 2026-12-22 → 2026-12-28 (+6d) |  |
| TAEXSWCL0100011 | Excavation works for Trench Part 01 |  | 2026-11-08 → 2026-11-14 (+6d) | 131.68d → 139.63d |
| TAEXSWCL0100021 | Bedding Works Part 01 |  | 2026-11-10 → 2026-11-16 (+6d) | 188.6d → 183d |
| TAEXSWCL0100031 | Install GRP Pipes & Fittings Part 01 |  | 2026-11-21 → 2026-11-28 (+7d) | 188.6d → 183d |
| TAEXSWCL0100051 | Manhole Installation with backfilling Part 01 |  | 2026-12-20 → 2026-12-27 (+7d) | 188.6d → 183d |
| TAEXSWCL0100041 | Backfilling Works for Trench Part 01 |  | 2026-12-08 → 2026-12-15 (+7d) | 188.6d → 183d |
| TAEXSWCL010006 | Leakage Test |  | 2026-12-22 → 2026-12-28 (+6d) | 188.6d → 183d |
| 4 | **Storm Networks** |  | 2026-12-28 → 2027-01-04 (+7d) |  |
| TAEXSTCL0100051 | Manhole Installation with backfilling Part 01 |  | 2026-12-13 → 2026-12-20 (+7d) | 54.79d → 48.79d |
| TAEXSTCL0100011 | Excavation works for Trench & Box Culvert Part 01 |  | 2026-10-22 → 2026-10-29 (+7d) | 20.33d → 22.43d |
| TAEXSTCL010006 | Install Catch Basin with UPVC Pipes & Fittings |  | 2026-12-19 → 2026-12-26 (+7d) | 54.79d → 48.79d |
| TAEXSTCL0100041 | Backfilling Works for Trench and Boxculvert Part 01 |  | 2026-10-25 → 2026-11-01 (+7d) | 95.33d → 89.33d |
| TAEXSTCL0100021 | Bedding Works Part 01 |  | 2026-10-25 → 2026-11-01 (+7d) | 75.22d → 71.92d |
| TAEXSTCL0100031 | Install GRP Pipes & Fittings Part 01 |  | 2026-10-26 → 2026-11-02 (+7d) | 75.22d → 71.92d |
| TAEXSTCL010007 | Leakage Test | 2026-12-24 → 2026-12-31 (+7d) | 2026-12-28 → 2027-01-04 (+7d) | 54.79d → 48.79d |
| 5 | **Local Road 06** |  | 2027-08-21 → 2027-08-19 (-2d) |  |
| 12 | **Road Works** |  | 2027-06-24 → 2027-06-23 (-1d) |  |
| TAEXRDCL0600031 | Subgrade Works Part 01 | 2027-03-07 → 2027-03-01 (-6d) | 2027-03-11 → 2027-03-06 (-5d) | 28.96d → 33.61d |
| TAEXRDCL060004 | ABC aggregate Base Course Works | 2027-03-11 → 2027-03-06 (-5d) | 2027-03-21 → 2027-03-15 (-6d) | 28.96d → 33.61d |
| TAEXRDCL060005 | MBC1 layer | 2027-03-21 → 2027-03-15 (-6d) | 2027-03-22 → 2027-03-16 (-6d) | 28.96d → 33.61d |
| TAEXRDCL060006 | BBC Base Course | 2027-03-22 → 2027-03-16 (-6d) | 2027-03-29 → 2027-03-23 (-6d) | 28.96d → 33.61d |
| TAEXRDCL060008 | Precast Concret Kerps | 2027-04-28 → 2027-04-27 (-1d) | 2027-05-19 → 2027-05-18 (-1d) | 2.5d → 3.16d |
| TAEXRDCL060007 | BWC Asphalt Wearing Course with RC | 2027-05-19 → 2027-05-18 (-1d) | 2027-05-22 → 2027-05-20 (-2d) | 33.5d → 34.16d |
| TAEXRDCL060009 | Precast Interlock Works | 2027-05-22 → 2027-05-20 (-2d) | 2027-06-07 → 2027-06-06 (-1d) | 33.5d → 34.16d |
| TAEXRDCL060010 | Stone Paving works | 2027-06-07 → 2027-06-06 (-1d) | 2027-06-21 → 2027-06-20 (-1d) | 33.5d → 34.16d |
| TAEXRDCL060011 | Road Marking | 2027-06-21 → 2027-06-20 (-1d) | 2027-06-22 → 2027-06-21 (-1d) | 33.5d → 34.16d |
| TAEXRDCL060012 | Traffic Sinage | 2027-06-22 → 2027-06-21 (-1d) | 2027-06-24 → 2027-06-23 (-1d) | 33.5d → 34.16d |

| ID | Task | Start | Finish | Complete | Total float |
| --- | --- | --- | --- | --- | --- |
| 1 | **Electrical Works** | 2027-05-18 → 2027-05-17 (-1d) | 2027-08-21 → 2027-08-19 (-2d) |  |  |
| TAEXELCL060001 | Trench Cut off | 2027-05-18 → 2027-05-17 (-1d) | 2027-05-30 → 2027-05-29 (-1d) |  | -29.3d → -28.68d |
| TAEXELCL060002 | Drawpit and PVC Pipes Installation | 2027-05-30 → 2027-05-29 (-1d) | 2027-06-05 → 2027-06-03 (-2d) |  | -23.15d → -22.53d |
| TAEXELCL060003 | Road Crossing Ducts | 2027-06-05 → 2027-06-03 (-2d) | 2027-06-07 → 2027-06-06 (-1d) |  | -23.15d → -22.53d |
| TAEXELCL060006 | Poles RC Foundation | 2027-06-05 → 2027-06-03 (-2d) | 2027-06-09 → 2027-06-08 (-1d) |  | 36.85d → 37.47d |
| TAEXELCL060004 | Trench Backfilling | 2027-06-07 → 2027-06-06 (-1d) | 2027-06-23 → 2027-06-22 (-1d) |  | -23.15d → -22.53d |
| TAEXELCL060008 | Lighting Pole Installation with Luminares | 2027-06-09 → 2027-06-08 (-1d) | 2027-06-16 → 2027-06-15 (-1d) |  | 39.85d → 40.47d |
| TAEXELCL060005 | Cables Pulling | 2027-08-15 → 2027-08-14 (-1d) | 2027-08-18 → 2027-08-17 (-1d) |  | -23.15d → -22.53d |
| TAEXELCL060007 | Earthing cables | 2027-08-18 → 2027-08-17 (-1d) | 2027-08-21 → 2027-08-19 (-2d) |  | -23.15d → -22.53d |
| 2 | **Telecommunication Works** | 2027-05-20 → 2027-05-27 (+7d) | 2027-07-07 → 2027-07-08 (+1d) |  |  |
| TAEXTCCL060001 | Trench Cut off | 2027-05-20 → 2027-05-27 (+7d) | 2027-06-01 → 2027-06-08 (+7d) |  | -17.61d → -23.61d |
| TAEXTCCL060002 | Drawpit and PVC Pipes Installation | 2027-06-13 → 2027-06-14 (+1d) | 2027-06-19 → 2027-06-20 (+1d) |  | -20.27d → -21.47d |
| TAEXTCCL060003 | Road Crossing Ducts | 2027-06-19 → 2027-06-20 (+1d) | 2027-06-21 → 2027-06-22 (+1d) |  | 20.73d → 19.53d |
| TAEXTCCL060004 | Trench Backfilling | 2027-06-21 → 2027-06-22 (+1d) | 2027-07-07 → 2027-07-08 (+1d) |  | 20.73d → 19.53d |
| 17 | **CCTV Works** | 2027-05-08 → 2027-05-15 (+7d) | 2027-07-05 → 2027-07-12 (+7d) |  |  |
| TAEXCCCL060001 | Pipe Installation with manhole | 2027-05-08 → 2027-05-15 (+7d) | 2027-05-22 → 2027-05-29 (+7d) |  | -14.55d → -20.55d |
| TAEXCCCL060002 | CCTV Swiches Lighting panels Installation | 2027-05-22 → 2027-05-29 (+7d) | 2027-06-06 → 2027-06-13 (+7d) |  | 32.45d → 26.45d |
| TAEXCCCL060003 | Cable laying and connected with Panels | 2027-06-06 → 2027-06-13 (+7d) | 2027-06-17 → 2027-06-24 (+7d) |  | 32.45d → 26.45d |
| TAEXCCCL060004 | Pole Installation with IP Outdoor CCTV POE Camera | 2027-06-17 → 2027-06-24 (+7d) | 2027-07-05 → 2027-07-12 (+7d) |  | 32.45d → 26.45d |
| 16 | **Potable Networks** |  | 2027-04-06 → 2027-04-13 (+7d) |  |  |
| TAEXPTCL060001 | Excavation works for Trench |  | 2026-11-04 → 2026-11-11 (+7d) |  | 62.04d → 56.04d |
| TAEXPTCL060003 | Install Pipes & Fittings |  | 2027-01-17 → 2027-01-24 (+7d) |  | 84.06d → 78.06d |
| TAEXPTCL060002 | Bedding Works |  | 2026-11-17 → 2026-11-24 (+7d) |  | 80.2d → 74.2d |
| TAEXPTCL060007 | Valve Chamber works |  | 2027-04-01 → 2027-04-08 (+7d) |  | 62.04d → 56.04d |
| TAEXPTCL060004 | Backfilling Works for Trench |  | 2027-01-19 → 2027-01-26 (+7d) |  | 140.24d → 134.64d |
| TAEXPTCL060005 | Install Valves with fittings |  | 2027-02-14 → 2027-02-21 (+7d) |  | 117.73d → 112.13d |
| TAEXPTCL060006 | Install fire hydrent | 2027-02-13 → 2027-02-20 (+7d) | 2027-02-20 → 2027-02-27 (+7d) |  | 84.06d → 78.06d |
| TAEXPTCL060008 | Inspection Test | 2027-04-01 → 2027-04-08 (+7d) | 2027-04-06 → 2027-04-13 (+7d) |  | 103.84d → 97.84d |
| 3 | **TSE Networks** |  | 2027-05-25 → 2027-06-01 (+7d) |  |  |
| TAEXTSCL060001 | Excavation works for Trench |  | 2026-11-16 → 2026-11-23 (+7d) |  | 51.42d → 45.42d |
| TAEXTSCL060003 | Install Pipes & Fittings |  | 2027-05-01 → 2027-05-08 (+7d) |  | 56.66d → 50.66d |
| TAEXTSCL060002 | Bedding Works |  | 2026-11-17 → 2026-11-24 (+7d) |  | 80.2d → 74.2d |
| TAEXTSCL060004 | Backfilling Works for Trench |  | 2027-05-05 → 2027-05-12 (+7d) |  | 56.66d → 50.66d |
| TAEXTSCL060007 | Inspection Test |  | 2027-05-25 → 2027-06-01 (+7d) |  | 68.55d → 62.55d |
| TAEXTSCL060006 | Valve Chamber works |  | 2027-05-24 → 2027-05-31 (+7d) |  | 68.55d → 62.55d |
| TAEXTSCL060005 | Install Valves with fittings |  | 2027-05-06 → 2027-05-13 (+7d) |  | 55.54d → 49.54d |
| 14 | **Sewerage Networks** |  | 2027-03-09 → 2027-03-03 (-6d) |  |  |
| TAEXSWCL060006 | Leakage Test |  | 2027-03-09 → 2027-03-03 (-6d) |  | 122.71d → 127.36d |
| TAEXSWCL0600021 | Bedding Works Part 01 |  | 2026-10-28 → 2026-11-04 (+7d) |  | 215.55d → 209.95d |
| TAEXSWCL0600031 | Install GRP Pipes & Fittings Part 01 |  | 2026-11-01 → 2026-11-07 (+6d) |  | 215.55d → 209.95d |
| TAEXSWCL0600051 | Manhole Installation with backfilling Part 01 |  | 2026-12-14 → 2026-12-19 (+5d) | 20% → 45% | 192.9d → 189.15d |
| TAEXSWCL0600041 | Backfilling Works for Trench Part 01 | 2026-11-07 → 2026-11-12 (+5d) | 2026-11-18 → 2026-11-24 (+6d) |  | 215.55d → 209.95d |
| 4 | **Storm Networks** |  | 2027-03-07 → 2027-03-01 (-6d) |  |  |
| TAEXSTCL060001 | Excavation works for Trench |  | 2026-10-25 → 2026-11-01 (+7d) |  | 20.33d → 22.43d |
| TAEXSTCL060002 | Bedding Works |  | 2026-11-18 → 2026-11-25 (+7d) |  | 80.2d → 74.2d |
| TAEXSTCL060003 | Install GRP Pipes & Fittings |  | 2026-11-19 → 2026-11-26 (+7d) |  | 80.2d → 74.2d |
| TAEXSTCL060005 | Manhole Installation with backfilling |  | 2026-12-19 → 2026-12-26 (+7d) |  | 80.2d → 74.2d |
| TAEXSTCL060004 | Backfilling Works for Trench |  | 2026-12-07 → 2026-12-14 (+7d) |  | 80.2d → 74.2d |
| TAEXSTCL060006 | Install Catch Basin with UPVC Pipes & Fittings | 2027-02-17 → 2027-02-11 (-6d) | 2027-03-03 → 2027-02-25 (-6d) |  | 28.96d → 33.61d |
| TAEXSTCL060007 | Leakage Test | 2027-03-03 → 2027-02-25 (-6d) | 2027-03-07 → 2027-03-01 (-6d) |  | 28.96d → 33.61d |
| 2 | **Local Road 07** |  | 2027-08-23 → 2027-08-22 (-1d) |  |  |
| 12 | **Road Works** |  | 2027-07-29 → 2027-07-28 (-1d) |  |  |
| TAEXRDCL070004 | ABC aggregate Base Course Works | 2027-04-06 → 2027-03-31 (-6d) | 2027-04-10 → 2027-04-04 (-6d) |  | 27.4d → 32.05d |
| TAEXRDCL070005 | MBC1 layer | 2027-04-10 → 2027-04-04 (-6d) | 2027-04-11 → 2027-04-05 (-6d) |  | 27.4d → 32.05d |
| TAEXRDCL070006 | BBC Base Course | 2027-04-11 → 2027-04-05 (-6d) | 2027-04-13 → 2027-04-07 (-6d) |  | 27.4d → 32.05d |
| TAEXRDCL070008 | Precast Concret Kerps | 2027-05-19 → 2027-05-18 (-1d) | 2027-06-09 → 2027-06-08 (-1d) |  | 2.5d → 3.16d |
| TAEXRDCL070007 | BWC Asphalt Wearing Course with RC | 2027-06-09 → 2027-06-08 (-1d) | 2027-06-10 → 2027-06-09 (-1d) |  | 3.5d → 4.16d |
| TAEXRDCL070009 | Precast Interlock Works | 2027-06-20 → 2027-06-19 (-1d) | 2027-07-08 → 2027-07-07 (-1d) |  | 3.5d → 4.16d |
| TAEXRDCL070010 | Stone Paving works | 2027-07-08 → 2027-07-07 (-1d) | 2027-07-26 → 2027-07-25 (-1d) |  | 3.5d → 4.16d |
| TAEXRDCL070011 | Road Marking | 2027-07-26 → 2027-07-25 (-1d) | 2027-07-27 → 2027-07-26 (-1d) |  | 3.5d → 4.16d |
| TAEXRDCL070012 | Traffic Sinage | 2027-07-27 → 2027-07-26 (-1d) | 2027-07-29 → 2027-07-28 (-1d) |  | 3.5d → 4.16d |
| 1 | **Electrical Works** | 2027-05-30 → 2027-05-29 (-1d) | 2027-08-23 → 2027-08-22 (-1d) |  |  |
| TAEXELCL070001 | Trench Cut off | 2027-05-30 → 2027-05-29 (-1d) | 2027-06-13 → 2027-06-12 (-1d) |  | -29.3d → -28.68d |
| TAEXELCL070002 | Drawpit and PVC Pipes Installation | 2027-06-13 → 2027-06-12 (-1d) | 2027-06-22 → 2027-06-21 (-1d) |  | 12.85d → 13.47d |
| TAEXELCL070003 | Road Crossing Ducts | 2027-06-22 → 2027-06-21 (-1d) | 2027-06-24 → 2027-06-23 (-1d) |  | 12.85d → 13.47d |
| TAEXELCL070006 | Poles RC Foundation | 2027-06-22 → 2027-06-21 (-1d) | 2027-06-26 → 2027-06-24 (-2d) |  | 24.85d → 25.47d |
| TAEXELCL070004 | Trench Backfilling | 2027-06-24 → 2027-06-23 (-1d) | 2027-07-06 → 2027-07-05 (-1d) |  | 12.85d → 13.47d |
| TAEXELCL070008 | Lighting Pole Installation with Luminares | 2027-06-26 → 2027-06-24 (-2d) | 2027-07-01 → 2027-06-30 (-1d) |  | 26.85d → 27.47d |
| TAEXELCL070005 | Cables Pulling | 2027-07-06 → 2027-07-05 (-1d) | 2027-07-10 → 2027-07-08 (-2d) |  | 12.85d → 13.47d |
| TAEXELCL070007 | Earthing cables | 2027-08-21 → 2027-08-19 (-2d) | 2027-08-23 → 2027-08-22 (-1d) |  | -23.15d → -22.53d |

| ID | Task | Start | Finish | Complete | Total float |
| --- | --- | --- | --- | --- | --- |
| 2 | **Telecommunication Works** | 2027-06-01 → 2027-06-08 (+7d) | 2027-07-07 → 2027-07-08 (+1d) |  |  |
| TAEXTCCL070001 | Trench Cut off | 2027-06-01 → 2027-06-08 (+7d) | 2027-06-08 → 2027-06-15 (+7d) |  | -17.61d → -23.61d |
| TAEXTCCL070002 | Drawpit and PVC Pipes Installation | 2027-06-19 → 2027-06-20 (+1d) | 2027-06-23 → 2027-06-24 (+1d) |  | -20.27d → -21.47d |
| TAEXTCCL070003 | Road Crossing Ducts | 2027-06-23 → 2027-06-24 (+1d) | 2027-06-26 → 2027-06-27 (+1d) |  | 20.73d → 19.53d |
| TAEXTCCL070004 | Trench Backfilling | 2027-06-26 → 2027-06-27 (+1d) | 2027-07-07 → 2027-07-08 (+1d) |  | 20.73d → 19.53d |
| 18 | **CCTV Works** | 2027-05-22 → 2027-05-29 (+7d) | 2027-07-12 → 2027-07-19 (+7d) |  |  |
| TAEXCCCL070001 | Pipe Installation with manhole | 2027-05-22 → 2027-05-29 (+7d) | 2027-06-01 → 2027-06-08 (+7d) |  | -14.55d → -20.55d |
| TAEXCCCL070002 | CCTV Swiches Lighting panels Installation | 2027-06-01 → 2027-06-08 (+7d) | 2027-06-15 → 2027-06-22 (+7d) |  | 26.45d → 20.45d |
| TAEXCCCL070003 | Cable laying and connected with Panels | 2027-06-15 → 2027-06-22 (+7d) | 2027-06-27 → 2027-07-04 (+7d) |  | 26.45d → 20.45d |
| TAEXCCCL070004 | Pole Installation with IP Outdoor CCTV POE Camera | 2027-06-27 → 2027-07-04 (+7d) | 2027-07-12 → 2027-07-19 (+7d) |  | 26.45d → 20.45d |
| 3 | **Potable Networks** |  | 2027-04-22 → 2027-04-29 (+7d) |  |  |
| TAEXPTCL070002 | Bedding Works |  | 2026-10-25 → 2026-11-01 (+7d) |  | 156.2d → 150.2d |
| TAEXPTCL070003 | Install Pipes & Fittings |  | 2027-01-23 → 2027-01-30 (+7d) |  | 84.06d → 78.06d |
| TAEXPTCL070004 | Backfilling Works for Trench |  | 2027-01-31 → 2027-02-07 (+7d) |  | 117.73d → 112.13d |
| TAEXPTCL070005 | Install Valves with fittings |  | 2027-01-31 → 2027-02-07 (+7d) |  | 117.73d → 112.13d |
| TAEXPTCL0700011 | Excavation works for Trench Part 01 | 2026-10-19 → 2026-10-26 (+7d) | 2026-10-24 → 2026-10-31 (+7d) |  | 6.46d → 3.16d |
| TAEXPTCL070006 | Install fire hydrent | 2027-01-23 → 2027-01-30 (+7d) | 2027-01-28 → 2027-02-04 (+7d) |  | 84.06d → 78.06d |
| TAEXPTCL070007 | Valve Chamber works | 2027-04-01 → 2027-04-08 (+7d) | 2027-04-18 → 2027-04-25 (+7d) |  | 62.04d → 56.04d |
| TAEXPTCL070008 | Inspection Test | 2027-04-18 → 2027-04-25 (+7d) | 2027-04-22 → 2027-04-29 (+7d) |  | 89.84d → 83.84d |
| 4 | **TSE Networks** |  | 2027-06-01 → 2027-06-08 (+7d) |  |  |
| TAEXTSCL070005 | Install Valves with fittings |  | 2027-05-12 → 2027-05-19 (+7d) |  | 55.54d → 49.54d |
| TAEXTSCL070006 | Valve Chamber works |  | 2027-05-27 → 2027-06-03 (+7d) |  | 55.54d → 49.54d |
| TAEXTSCL0700011 | Excavation works for Trench Part 01 | 2026-10-22 → 2026-10-29 (+7d) | 2026-10-27 → 2026-11-03 (+7d) |  | 8.34d → 5.04d |
| TAEXTSCL0700021 | Bedding Works Part 01 | 2026-10-27 → 2026-11-03 (+7d) | 2026-10-28 → 2026-11-04 (+7d) |  | 172.45d → 166.95d |
| TAEXTSCL0700031 | Install Pipes & Fittings Part 01 | 2026-10-28 → 2026-11-04 (+7d) | 2026-11-03 → 2026-11-10 (+7d) |  | 172.45d → 166.95d |
| TAEXTSCL0700041 | Backfilling Works for Trench Part 01 | 2026-11-03 → 2026-11-10 (+7d) | 2026-11-12 → 2026-11-19 (+7d) |  | 178.37d → 172.87d |
| TAEXTSCL070007 | Inspection Test | 2027-05-27 → 2027-06-03 (+7d) | 2027-06-01 → 2027-06-08 (+7d) |  | 55.54d → 49.54d |
| 15 | **Sewerage Networks** |  | 2026-12-10 → 2026-12-16 (+6d) |  |  |
| TAEXSWCL070005 | Manhole Installation with backfilling |  | 2026-12-07 → 2026-10-25 A (-43d) | 90% → 100% | 198.15d → none |
| TAEXSWCL070004 | Backfilling Works for Trench | 2026-10-26 → 2026-10-22 A (-4d) | 2026-11-11 → 2026-10-25 A (-17d) | 0% → 100% | 210.2d → none |
| TAEXSWCL070006 | Leakage Test | 2026-12-07 → 2026-12-13 (+6d) | 2026-12-10 → 2026-12-16 (+6d) |  | 198.15d → 193.35d |
| 5 | **Storm Networks** |  | 2027-02-18 → 2027-02-13 (-5d) |  |  |
| TAEXSTCL070007 | Leakage Test |  | 2027-02-18 → 2027-02-13 (-5d) |  | 27.4d → 32.05d |
| TAEXSTCL0700011 | Excavation works for Trench Part 01 | 2026-10-25 → 2026-11-01 (+7d) | 2026-10-29 → 2026-11-05 (+7d) |  | 20.33d → 22.43d |
| TAEXSTCL0700021 | Bedding Works Part 01 | 2026-10-29 → 2026-11-05 (+7d) | 2026-10-31 → 2026-11-07 (+7d) |  | 81.43d → 75.43d |
| TAEXSTCL0700031 | Install GRP Pipes & Fittings Part 01 | 2026-10-31 → 2026-11-07 (+7d) | 2026-11-05 → 2026-11-12 (+7d) |  | 81.43d → 75.43d |
| TAEXSTCL0700041 | Backfilling Works for Trench Part 01 | 2026-11-14 → 2026-11-21 (+7d) | 2026-11-23 → 2026-11-30 (+7d) |  | 81.43d → 75.43d |
| TAEXSTCL0700051 | Manhole Installation with backfilling Part 01 | 2026-12-12 → 2026-12-19 (+7d) | 2026-12-17 → 2026-12-24 (+7d) |  | 69.9d → 63.9d |
| TAEXSTCL070006 | Install Catch Basin with UPVC Pipes & Fittings | 2027-02-06 → 2027-01-31 (-6d) | 2027-02-17 → 2027-02-11 (-6d) |  | 27.4d → 32.05d |
| 6 | **Local Road 08** |  | 2027-08-25 → 2027-08-24 (-1d) |  |  |
| 12 | **Road Works** |  | 2027-07-28 → 2027-07-27 (-1d) |  |  |
| TAEXRDCL0800011 | Road Excavation and Disposal Part 01 | 2027-03-07 → 2027-03-01 (-6d) | 2027-03-13 → 2027-03-07 (-6d) |  | 34.9d → 39.55d |
| TAEXRDCL0800021 | Backfilling Works for Road Part 01 | 2027-03-13 → 2027-03-07 (-6d) | 2027-03-21 → 2027-03-15 (-6d) |  | 34.9d → 39.55d |
| TAEXRDCL0800031 | Subgrade Works Part 01 | 2027-03-21 → 2027-03-15 (-6d) | 2027-03-25 → 2027-03-20 (-5d) |  | 34.9d → 39.55d |
| TAEXRDCL080004 | ABC aggregate Base Course Works | 2027-03-25 → 2027-03-20 (-5d) | 2027-03-30 → 2027-03-24 (-6d) |  | 34.9d → 39.55d |
| TAEXRDCL080005 | MBC1 layer | 2027-03-30 → 2027-03-24 (-6d) | 2027-03-31 → 2027-03-25 (-6d) |  | 34.9d → 39.55d |
| TAEXRDCL080006 | BBC Base Course | 2027-03-31 → 2027-03-25 (-6d) | 2027-04-05 → 2027-03-30 (-6d) |  | 34.9d → 39.55d |
| TAEXRDCL080008 | Precast Concret Kerps | 2027-06-09 → 2027-06-08 (-1d) | 2027-06-26 → 2027-06-24 (-2d) |  | 2.5d → 3.16d |
| TAEXRDCL080007 | BWC Asphalt Wearing Course with RC | 2027-06-26 → 2027-06-24 (-2d) | 2027-06-27 → 2027-06-26 (-1d) |  | 4.5d → 5.16d |
| TAEXRDCL080009 | Precast Interlock Works | 2027-06-27 → 2027-06-26 (-1d) | 2027-07-17 → 2027-07-15 (-2d) |  | 4.5d → 5.16d |
| TAEXRDCL080010 | Stone Paving works | 2027-07-17 → 2027-07-15 (-2d) | 2027-07-25 → 2027-07-24 (-1d) |  | 4.5d → 5.16d |
| TAEXRDCL080011 | Road Marking | 2027-07-25 → 2027-07-24 (-1d) | 2027-07-26 → 2027-07-25 (-1d) |  | 4.5d → 5.16d |
| TAEXRDCL080012 | Traffic Sinage | 2027-07-26 → 2027-07-25 (-1d) | 2027-07-28 → 2027-07-27 (-1d) |  | 4.5d → 5.16d |
| 1 | **Electrical Works** |  | 2027-08-25 → 2027-08-24 (-1d) |  |  |
| TAEXELCL080001 | Trench Cut off | 2027-06-13 → 2027-06-12 (-1d) | 2027-06-24 → 2027-06-23 (-1d) |  | -29.3d → -28.68d |
| TAEXELCL080002 | Drawpit and PVC Pipes Installation | 2027-06-24 → 2027-06-23 (-1d) | 2027-06-30 → 2027-06-29 (-1d) |  | 3.85d → 4.47d |
| TAEXELCL080003 | Road Crossing Ducts | 2027-06-30 → 2027-06-29 (-1d) | 2027-07-03 → 2027-07-01 (-2d) |  | 3.85d → 4.47d |
| TAEXELCL080006 | Poles RC Foundation | 2027-06-30 → 2027-06-29 (-1d) | 2027-07-05 → 2027-07-04 (-1d) |  | 17.85d → 18.47d |
| TAEXELCL080004 | Trench Backfilling | 2027-07-03 → 2027-07-01 (-2d) | 2027-07-19 → 2027-07-18 (-1d) |  | 3.85d → 4.47d |
| TAEXELCL080008 | Lighting Pole Installation with Luminares | 2027-07-05 → 2027-07-04 (-1d) | 2027-07-12 → 2027-07-11 (-1d) |  | 17.85d → 18.47d |
| TAEXELCL080005 | Cables Pulling | 2027-07-19 → 2027-07-18 (-1d) | 2027-07-22 → 2027-07-21 (-1d) |  | 3.85d → 4.47d |
| TAEXELCL080007 | Earthing cables | 2027-08-23 → 2027-08-22 (-1d) | 2027-08-25 → 2027-08-24 (-1d) |  | -23.15d → -22.53d |
| 2 | **Telecommunication Works** | 2027-06-08 → 2027-06-15 (+7d) | 2027-07-18 → 2027-07-21 (+3d) |  |  |
| TAEXTCCL080001 | Trench Cut off | 2027-06-08 → 2027-06-15 (+7d) | 2027-06-20 → 2027-06-27 (+7d) |  | -17.61d → -23.61d |
| TAEXTCCL080002 | Drawpit and PVC Pipes Installation | 2027-06-23 → 2027-06-27 (+4d) | 2027-06-29 → 2027-07-03 (+4d) |  | -20.27d → -23.61d |
| TAEXTCCL080003 | Road Crossing Ducts | 2027-06-29 → 2027-07-03 (+4d) | 2027-07-01 → 2027-07-05 (+4d) |  | 11.73d → 8.39d |
| TAEXTCCL080004 | Trench Backfilling | 2027-07-01 → 2027-07-05 (+4d) | 2027-07-18 → 2027-07-21 (+3d) |  | 11.73d → 8.39d |
| 19 | **CCTV Works** | 2027-06-01 → 2027-06-08 (+7d) | 2027-07-25 → 2027-08-01 (+7d) |  |  |
| TAEXCCCL080001 | Pipe Installation with manhole | 2027-06-01 → 2027-06-08 (+7d) | 2027-06-10 → 2027-06-17 (+7d) |  | -14.55d → -20.55d |
| TAEXCCCL080002 | CCTV Swiches Lighting panels Installation | 2027-06-10 → 2027-06-17 (+7d) | 2027-06-26 → 2027-07-03 (+7d) |  | 15.45d → 9.45d |

| ID | Task | Start | Finish | Complete | Total float |
| --- | --- | --- | --- | --- | --- |
| TAEXCCCL080003 | Cable laying and connected with Panels | 2027-06-26 → 2027-07-03 (+7d) | 2027-07-07 → 2027-07-14 (+7d) |  | 15.45d → 9.45d |
| TAEXCCCL080004 | Pole Installation with IP Outdoor CCTV POE Camera | 2027-07-07 → 2027-07-14 (+7d) | 2027-07-25 → 2027-08-01 (+7d) |  | 15.45d → 9.45d |
| 3 | **Potable Networks** |  | 2027-05-06 → 2027-05-13 (+7d) |  |  |
| TAEXPTCL080001 | Excavation works for Trench |  | 2026-11-07 → 2026-11-14 (+7d) |  | 62.04d → 56.04d |
| TAEXPTCL080003 | Install Pipes & Fittings |  | 2027-01-25 → 2027-02-01 (+7d) |  | 123.86d → 118.26d |
| TAEXPTCL080002 | Bedding Works |  | 2026-11-08 → 2026-11-15 (+7d) |  | 168.01d → 162.41d |
| TAEXPTCL080006 | Install fire hydrent |  | 2027-02-25 → 2027-03-04 (+7d) |  | 105.76d → 99.76d |
| TAEXPTCL080007 | Valve Chamber works |  | 2027-05-02 → 2027-05-09 (+7d) |  | 62.04d → 56.04d |
| TAEXPTCL080004 | Backfilling Works for Trench | 2027-01-25 → 2027-02-01 (+7d) | 2027-02-11 → 2027-02-18 (+7d) |  | 123.86d → 118.26d |
| TAEXPTCL080005 | Install Valves with fittings | 2027-02-14 → 2027-02-21 (+7d) | 2027-02-18 → 2027-02-25 (+7d) |  | 117.73d → 112.13d |
| TAEXPTCL080008 | Inspection Test | 2027-05-02 → 2027-05-09 (+7d) | 2027-05-06 → 2027-05-13 (+7d) |  | 73.04d → 67.04d |
| 4 | **TSE Networks** |  | 2027-05-11 → 2027-05-18 (+7d) |  |  |
| TAEXTSCL080001 | Excavation works for Trench |  | 2026-11-21 → 2026-11-28 (+7d) |  | 51.42d → 45.42d |
| TAEXTSCL080005 | Install Valves with fittings |  | 2026-12-13 → 2026-12-20 (+7d) |  | 184.32d → 178.32d |
| TAEXTSCL080006 | Valve Chamber works |  | 2026-12-28 → 2027-01-04 (+7d) |  | 184.32d → 178.32d |
| TAEXTSCL080002 | Bedding Works |  | 2026-11-21 → 2026-11-28 (+7d) |  | 157.27d → 151.67d |
| TAEXTSCL080003 | Install Pipes & Fittings |  | 2026-11-25 → 2026-12-02 (+7d) |  | 157.27d → 151.67d |
| TAEXTSCL080004 | Backfilling Works for Trench | 2026-11-25 → 2026-12-02 (+7d) | 2026-12-13 → 2026-12-20 (+7d) |  | 184.32d → 178.32d |
| TAEXTSCL080007 | Inspection Test | 2027-05-06 → 2027-05-13 (+7d) | 2027-05-11 → 2027-05-18 (+7d) |  | 73.04d → 67.04d |
| 16 | **Sewerage Networks** |  | 2026-12-08 → 2026-12-15 (+7d) |  |  |
| TAEXSWCL080006 | Leakage Test |  | 2026-12-08 → 2026-12-15 (+7d) | 70% → 80% | 200.95d → 194.75d |
| TAEXSWCL0800051 | Manhole Installation with backfilling Part 01 |  | 2026-12-07 → 2026-12-14 (+7d) | 95% → 90% | 200.95d → 194.75d |
| 5 | **Storm Networks** |  | 2027-01-25 → 2027-02-01 (+7d) |  |  |
| TAEXSTCL0800051 | Manhole Installation with backfilling Part 01 |  | 2026-12-14 → 2026-12-21 (+7d) |  | 7d → 9.1d |
| TAEXSTCL080007 | Leakage Test |  | 2027-01-25 → 2027-02-01 (+7d) |  | 85d → 79d |
| TAEXSTCL0800031 | Install GRP Pipes & Fittings Part 01 |  | 2026-10-29 → 2026-11-05 (+7d) |  | 20.33d → 22.43d |
| TAEXSTCL0800041 | Backfilling Works for Trench Part 01 |  | 2026-11-16 → 2026-11-23 (+7d) |  | 20.33d → 22.43d |
| TAEXSTCL080006 | Install Catch Basin with UPVC Pipes & Fittings | 2026-12-14 → 2026-12-21 (+7d) | 2026-12-27 → 2027-01-03 (+7d) |  | 7d → 9.1d |
| 3 | **Local Road 09** |  | 2027-08-28 → 2027-08-26 (-2d) |  |  |
| 12 | **Road Works** |  | 2027-07-31 → 2027-07-29 (-2d) |  |  |
| TAEXRDCL090004 | ABC aggregate Base Course Works | 2027-03-04 → 2027-03-07 (+3d) | 2027-03-10 → 2027-03-13 (+3d) |  | 52.95d → 51.45d |
| TAEXRDCL090005 | MBC1 layer | 2027-03-10 → 2027-03-13 (+3d) | 2027-03-11 → 2027-03-14 (+3d) |  | 52.95d → 51.45d |
| TAEXRDCL090006 | BBC Base Course | 2027-03-11 → 2027-03-14 (+3d) | 2027-03-14 → 2027-03-16 (+2d) |  | 52.95d → 51.45d |
| TAEXRDCL090008 | Precast Concret Kerps | 2027-06-26 → 2027-06-24 (-2d) | 2027-07-11 → 2027-07-10 (-1d) |  | 2.5d → 3.16d |
| TAEXRDCL090007 | BWC Asphalt Wearing Course with RC | 2027-07-11 → 2027-07-10 (-1d) | 2027-07-12 → 2027-07-11 (-1d) |  | 2.5d → 3.16d |
| TAEXRDCL090009 | Precast Interlock Works | 2027-07-12 → 2027-07-11 (-1d) | 2027-07-26 → 2027-07-25 (-1d) |  | 2.5d → 3.16d |
| TAEXRDCL090010 | Stone Paving works | 2027-07-26 → 2027-07-25 (-1d) | 2027-07-28 → 2027-07-27 (-1d) |  | 2.5d → 3.16d |
| TAEXRDCL090011 | Road Marking | 2027-07-28 → 2027-07-27 (-1d) | 2027-07-29 → 2027-07-28 (-1d) |  | 2.5d → 3.16d |
| TAEXRDCL090012 | Traffic Sinage | 2027-07-29 → 2027-07-28 (-1d) | 2027-07-31 → 2027-07-29 (-2d) |  | 2.5d → 3.16d |
| 1 | **Electrical Works** | 2027-06-24 → 2027-06-23 (-1d) | 2027-08-28 → 2027-08-26 (-2d) |  |  |
| TAEXELCL090001 | Trench Cut off | 2027-06-24 → 2027-06-23 (-1d) | 2027-07-07 → 2027-07-06 (-1d) |  | -29.3d → -28.68d |
| TAEXELCL090002 | Drawpit and PVC Pipes Installation | 2027-07-07 → 2027-07-06 (-1d) | 2027-07-18 → 2027-07-17 (-1d) |  | -4.15d → -3.53d |
| TAEXELCL090003 | Road Crossing Ducts | 2027-07-18 → 2027-07-17 (-1d) | 2027-07-20 → 2027-07-19 (-1d) |  | -4.15d → -3.53d |
| TAEXELCL090006 | Poles RC Foundation | 2027-07-18 → 2027-07-17 (-1d) | 2027-07-21 → 2027-07-20 (-1d) |  | 5.85d → 6.47d |
| TAEXELCL090004 | Trench Backfilling | 2027-07-20 → 2027-07-19 (-1d) | 2027-08-01 → 2027-07-31 (-1d) |  | -4.15d → -3.53d |
| TAEXELCL090008 | Lighting Pole Installation with Luminares | 2027-07-21 → 2027-07-20 (-1d) | 2027-07-26 → 2027-07-25 (-1d) |  | 5.85d → 6.47d |
| TAEXELCL090005 | Cables Pulling | 2027-08-01 → 2027-07-31 (-1d) | 2027-08-03 → 2027-08-02 (-1d) |  | -4.15d → -3.53d |
| TAEXELCL090007 | Earthing cables | 2027-08-25 → 2027-08-24 (-1d) | 2027-08-28 → 2027-08-26 (-2d) |  | -23.15d → -22.53d |
| 2 | **Telecommunication Works** | 2027-06-20 → 2027-06-27 (+7d) | 2027-07-18 → 2027-07-21 (+3d) |  |  |
| TAEXTCCL090001 | Trench Cut off | 2027-06-20 → 2027-06-27 (+7d) | 2027-06-26 → 2027-07-03 (+7d) |  | -17.61d → -23.61d |
| TAEXTCCL090002 | Drawpit and PVC Pipes Installation | 2027-06-29 → 2027-07-03 (+4d) | 2027-07-04 → 2027-07-07 (+3d) |  | -20.27d → -23.61d |
| TAEXTCCL090003 | Road Crossing Ducts | 2027-07-04 → 2027-07-07 (+3d) | 2027-07-06 → 2027-07-10 (+4d) |  | 11.73d → 8.39d |
| TAEXTCCL090004 | Trench Backfilling | 2027-07-06 → 2027-07-10 (+4d) | 2027-07-18 → 2027-07-21 (+3d) |  | 11.73d → 8.39d |
| 20 | **CCTV Works** | 2027-06-10 → 2027-06-17 (+7d) | 2027-07-24 → 2027-07-31 (+7d) |  |  |
| TAEXCCCL090001 | Pipe Installation with manhole | 2027-06-10 → 2027-06-17 (+7d) | 2027-06-19 → 2027-06-26 (+7d) |  | -14.55d → -20.55d |
| TAEXCCCL090002 | CCTV Swiches Lighting panels Installation | 2027-06-19 → 2027-06-26 (+7d) | 2027-06-30 → 2027-07-07 (+7d) |  | 16.45d → 10.45d |
| TAEXCCCL090003 | Cable laying and connected with Panels | 2027-06-30 → 2027-07-07 (+7d) | 2027-07-10 → 2027-07-17 (+7d) |  | 16.45d → 10.45d |
| TAEXCCCL090004 | Pole Installation with IP Outdoor CCTV POE Camera | 2027-07-10 → 2027-07-17 (+7d) | 2027-07-24 → 2027-07-31 (+7d) |  | 16.45d → 10.45d |
| 3 | **Potable Networks** |  | 2027-05-22 → 2027-05-29 (+7d) |  |  |
| TAEXPTCL090005 | Install Valves with fittings |  | 2027-02-02 → 2027-02-09 (+7d) |  | 117.73d → 112.13d |
| TAEXPTCL090006 | Install fire hydrent | 2027-01-28 → 2027-02-04 (+7d) | 2027-02-04 → 2027-02-11 (+7d) |  | 84.06d → 78.06d |
| TAEXPTCL090007 | Valve Chamber works | 2027-05-02 → 2027-05-09 (+7d) | 2027-05-18 → 2027-05-25 (+7d) |  | 62.04d → 56.04d |
| TAEXPTCL090008 | Inspection Test | 2027-05-18 → 2027-05-25 (+7d) | 2027-05-22 → 2027-05-29 (+7d) |  | 64.04d → 58.04d |
| 4 | **TSE Networks** |  | 2027-05-29 → 2027-06-05 (+7d) |  |  |
| TAEXTSCL090005 | Install Valves with fittings |  | 2027-05-09 → 2027-05-16 (+7d) |  | 55.54d → 49.54d |
| TAEXTSCL0900011 | Excavation works for Trench Part 01 | 2026-10-27 → 2026-11-03 (+7d) | 2026-11-10 → 2026-11-17 (+7d) |  | 8.34d → 5.04d |
| TAEXTSCL090002 | Bedding Works | 2026-11-10 → 2026-11-17 (+7d) | 2026-11-12 → 2026-11-19 (+7d) |  | 43.84d → 45.94d |
| TAEXTSCL090003 | Install Pipes & Fittings | 2026-11-25 → 2026-12-02 (+7d) | 2026-12-02 → 2026-12-09 (+7d) |  | 157.27d → 151.67d |
| TAEXTSCL090004 | Backfilling Works for Trench | 2026-12-02 → 2026-12-09 (+7d) | 2026-12-16 → 2026-12-23 (+7d) |  | 157.27d → 151.67d |
| TAEXTSCL090006 | Valve Chamber works | 2027-05-09 → 2027-05-16 (+7d) | 2027-05-25 → 2027-06-01 (+7d) |  | 58.69d → 52.69d |

| ID | Task | Start | Finish | Complete | Total float |
| --- | --- | --- | --- | --- | --- |
| TAEXTSCL090007 | Inspection Test | 2027-05-25 → 2027-06-01 (+7d) | 2027-05-29 → 2027-06-05 (+7d) |  | 58.69d → 52.69d |
| 17 | **Sewerage Networks** |  | 2026-12-10 → 2026-10-29 (-42d) |  |  |
| TAEXSWCL0900051 | Manhole Installation with backfilling Part 01 |  | 2026-12-10 → 2026-10-25 A (-46d) | 40% → 100% | 198.75d → none |
| TAEXSWCL0900041 | Backfilling Works for Trench Part 01 | 2026-10-19 → 2026-10-24 A (+5d) | 2026-10-27 → 2026-10-29 (+2d) | 0% → 60% | 236d → 234.8d |
| 5 | **Storm Networks** |  | 2027-01-11 → 2027-01-13 (+2d) |  |  |
| TAEXSTCL090005 | Manhole Installation with backfilling |  | 2026-12-13 → 2026-12-20 (+7d) |  | 18.9d → 21d |
| TAEXSTCL090007 | Leakage Test |  | 2027-01-11 → 2027-01-13 (+2d) |  | 52.95d → 51.45d |
| TAEXSTCL090006 | Install Catch Basin with UPVC Pipes & Fittings | 2026-12-31 → 2027-01-03 (+3d) | 2027-01-11 → 2027-01-13 (+2d) |  | 2.5d → 9.1d |
| 4 | **Upgrade Local 06** |  | 2027-09-02 → 2027-09-01 (-1d) |  |  |
| 22 | **Electrical Works** |  | 2027-09-02 → 2027-09-01 (-1d) |  |  |
| TAEXELCU060002 | Drawpit and PVC Pipes Installation |  | 2027-08-12 → 2027-08-11 (-1d) |  | -26.28d → -25.66d |
| TAEXELCU060003 | Road Crossing Ducts |  | 2027-08-15 → 2027-08-14 (-1d) |  | -26.28d → -25.66d |
| TAEXELCU060001 | Trench Cut off | 2027-07-27 → 2027-07-26 (-1d) | 2027-08-08 → 2027-08-07 (-1d) |  | -29.3d → -28.68d |
| TAEXELCU060006 | Poles RC Foundation | 2027-08-12 → 2027-08-11 (-1d) | 2027-08-17 → 2027-08-16 (-1d) |  | -19.27d → -18.65d |
| TAEXELCU060004 | Trench Backfilling | 2027-08-15 → 2027-08-14 (-1d) | 2027-08-26 → 2027-08-25 (-1d) |  | -26.28d → -25.66d |
| TAEXELCU060008 | Lighting Pole Installation with Luminares | 2027-08-17 → 2027-08-16 (-1d) | 2027-08-24 → 2027-08-23 (-1d) |  | -19.27d → -18.65d |
| TAEXELCU060005 | Cables Pulling | 2027-08-26 → 2027-08-25 (-1d) | 2027-08-31 → 2027-08-30 (-1d) |  | -26.28d → -25.66d |
| TAEXELCU060007 | Earthing cables | 2027-08-31 → 2027-08-30 (-1d) | 2027-09-02 → 2027-09-01 (-1d) |  | -26.28d → -25.66d |
| 23 | **CCTV Works** | 2027-06-27 → 2027-07-04 (+7d) | 2027-08-09 → 2027-08-16 (+7d) |  |  |
| TAEXCCCU060001 | Pipe Installation with manhole | 2027-06-27 → 2027-07-04 (+7d) | 2027-07-06 → 2027-07-13 (+7d) |  | -9.55d → -15.55d |
| TAEXCCCU060002 | CCTV Swiches Lighting panels Installation | 2027-07-06 → 2027-07-13 (+7d) | 2027-07-18 → 2027-07-25 (+7d) |  | 2.45d → -3.55d |
| TAEXCCCU060003 | Cable laying and connected with Panels | 2027-07-18 → 2027-07-25 (+7d) | 2027-07-28 → 2027-08-04 (+7d) |  | 2.45d → -3.55d |
| TAEXCCCU060004 | Pole Installation with IP Outdoor CCTV POE Camera | 2027-07-28 → 2027-08-04 (+7d) | 2027-08-09 → 2027-08-16 (+7d) |  | 2.45d → -3.55d |
| TAEXELCU070002 | Drawpit and PVC Pipes Installation |  | 2027-08-19 → 2027-08-18 (-1d) |  | -26.81d → -26.19d |
| TAEXELCU070001 | Trench Cut off | 2027-08-08 → 2027-08-07 (-1d) | 2027-08-16 → 2027-08-15 (-1d) |  | -29.3d → -28.68d |
| TAEXELCU070006 | Poles RC Foundation | 2027-08-19 → 2027-08-18 (-1d) | 2027-08-23 → 2027-08-22 (-1d) |  | -23.1d → -22.48d |
| TAEXELCU070008 | Lighting Pole Installation with Luminares | 2027-08-23 → 2027-08-22 (-1d) | 2027-08-29 → 2027-08-28 (-1d) |  | -23.1d → -22.48d |
| 24 | **CCTV Works** | 2027-07-06 → 2027-07-13 (+7d) | 2027-08-18 → 2027-08-25 (+7d) |  |  |
| TAEXCCCU070001 | Pipe Installation with manhole | 2027-07-06 → 2027-07-13 (+7d) | 2027-07-15 → 2027-07-22 (+7d) |  | -9.55d → -15.55d |
| TAEXCCCU070002 | CCTV Swiches Lighting panels Installation | 2027-07-15 → 2027-07-22 (+7d) | 2027-07-27 → 2027-08-03 (+7d) |  | -5.55d → -11.55d |
| TAEXCCCU070003 | Cable laying and connected with Panels | 2027-07-27 → 2027-08-03 (+7d) | 2027-08-07 → 2027-08-14 (+7d) |  | -5.55d → -11.55d |
| TAEXCCCU070004 | Pole Installation with IP Outdoor CCTV POE Camera | 2027-08-07 → 2027-08-14 (+7d) | 2027-08-18 → 2027-08-25 (+7d) |  | -5.55d → -11.55d |
| TAEXELCU080001 | Trench Cut off |  | 2027-08-17 → 2027-08-16 (-1d) |  | -29.3d → -28.68d |
| TAEXELCU080004 | Trench Backfilling | 2027-08-22 → 2027-08-16 (-6d) | 2027-08-31 → 2027-08-25 (-6d) |  | -25.3d → -20.68d |
| TAEXELCU080006 | Poles RC Foundation | 2027-08-19 → 2027-08-16 (-3d) | 2027-08-23 → 2027-08-19 (-4d) |  | -23.8d → -20.68d |
| TAEXELCU080008 | Lighting Pole Installation with Luminares | 2027-08-23 → 2027-08-19 (-4d) | 2027-08-29 → 2027-08-25 (-4d) |  | -23.8d → -20.68d |
| TAEXELCU080005 | Cables Pulling | 2027-08-31 → 2027-08-25 (-6d) | 2027-09-03 → 2027-08-29 (-5d) |  | -25.3d → -20.68d |
| 25 | **CCTV Works** | 2027-07-06 → 2027-07-13 (+7d) | 2027-08-18 → 2027-08-25 (+7d) |  |  |
| TAEXCCCU080001 | Pipe Installation with manhole | 2027-07-06 → 2027-07-13 (+7d) | 2027-07-15 → 2027-07-22 (+7d) |  | -9.55d → -15.55d |
| TAEXCCCU080002 | CCTV Swiches Lighting panels Installation | 2027-07-15 → 2027-07-22 (+7d) | 2027-07-27 → 2027-08-03 (+7d) |  | -5.55d → -11.55d |
| TAEXCCCU080003 | Cable laying and connected with Panels | 2027-07-27 → 2027-08-03 (+7d) | 2027-08-07 → 2027-08-14 (+7d) |  | -5.55d → -11.55d |
| TAEXCCCU080004 | Pole Installation with IP Outdoor CCTV POE Camera | 2027-08-07 → 2027-08-14 (+7d) | 2027-08-18 → 2027-08-25 (+7d) |  | -5.55d → -11.55d |
| TAEXELCU090001 | Trench Cut off | 2027-08-17 → 2027-08-16 (-1d) | 2027-08-25 → 2027-08-24 (-1d) |  | -29.3d → -28.68d |
| TAEXELCU090004 | Trench Backfilling | 2027-08-25 → 2027-08-24 (-1d) | 2027-09-03 → 2027-09-02 (-1d) |  | -26.3d → -25.68d |
| TAEXELCU090006 | Poles RC Foundation | 2027-08-25 → 2027-08-24 (-1d) | 2027-08-30 → 2027-08-29 (-1d) |  | -29.3d → -28.68d |
| TAEXELCU090008 | Lighting Pole Installation with Luminares | 2027-08-30 → 2027-08-29 (-1d) | 2027-09-04 → 2027-09-03 (-1d) |  | -29.3d → -28.68d |
| TAEXELCU090005 | Cables Pulling | 2027-09-03 → 2027-09-02 (-1d) | 2027-09-06 → 2027-09-05 (-1d) |  | -26.3d → -25.68d |
| 1 | **CCTV Works** | 2027-07-15 → 2027-07-22 (+7d) | 2027-08-28 → 2027-09-03 (+6d) |  |  |
| TAEXCCCU090001 | Pipe Installation with manhole | 2027-07-15 → 2027-07-22 (+7d) | 2027-07-24 → 2027-07-31 (+7d) |  | -9.55d → -15.55d |
| TAEXCCCU090002 | CCTV Swiches Lighting panels Installation | 2027-07-24 → 2027-07-31 (+7d) | 2027-08-04 → 2027-08-11 (+7d) |  | -9.55d → -15.55d |
| TAEXCCCU090003 | Cable laying and connected with Panels | 2027-08-04 → 2027-08-11 (+7d) | 2027-08-16 → 2027-08-23 (+7d) |  | -9.55d → -15.55d |
| TAEXCCCU090004 | Pole Installation with IP Outdoor CCTV POE Camera | 2027-08-16 → 2027-08-23 (+7d) | 2027-08-28 → 2027-09-03 (+6d) |  | -9.55d → -15.55d |
| 18 | **Road works** | 2027-03-24 → 2027-03-18 (-6d) | 2027-06-30 → 2027-06-24 (-6d) |  |  |
| TAEXRDCU120002 | Precast Concret Kerps | 2027-03-24 → 2027-03-18 (-6d) | 2027-04-14 → 2027-04-08 (-6d) |  | 28.96d → 33.61d |
| TAEXRDCU120001 | BWC Asphalt Wearing Course with RC | 2027-05-31 → 2027-05-25 (-6d) | 2027-06-01 → 2027-05-26 (-6d) |  | 28.96d → 33.61d |
| TAEXRDCU120003 | Precast Interlock Works | 2027-06-01 → 2027-05-26 (-6d) | 2027-06-20 → 2027-06-14 (-6d) |  | 28.96d → 33.61d |
| TAEXRDCU120004 | Stone Paving works | 2027-06-20 → 2027-06-14 (-6d) | 2027-06-26 → 2027-06-20 (-6d) |  | 28.96d → 33.61d |
| TAEXRDCU120005 | Road Marking | 2027-06-26 → 2027-06-20 (-6d) | 2027-06-27 → 2027-06-21 (-6d) |  | 28.96d → 33.61d |
| TAEXRDCU120006 | Traffic Sinage | 2027-06-27 → 2027-06-21 (-6d) | 2027-06-30 → 2027-06-24 (-6d) |  | 28.96d → 33.61d |
| TAEXELCU120001 | Trench Cut off |  | 2027-05-04 → 2027-05-03 (-1d) |  | -29.3d → -28.68d |
| TAEXELCU120002 | Drawpit and PVC Pipes Installation |  | 2027-05-06 → 2027-05-05 (-1d) |  | 57.96d → 58.58d |
| TAEXELCU120005 | Cables Pulling |  | 2027-06-17 → 2027-06-16 (-1d) |  | 45.93d → 46.55d |
| TAEXELCU120004 | Trench Backfilling |  | 2027-06-10 → 2027-06-09 (-1d) |  | 45.93d → 46.55d |
| TAEXELCU120006 | Poles RC Foundation | 2027-05-06 → 2027-05-05 (-1d) | 2027-05-15 → 2027-05-13 (-2d) |  | 57.96d → 58.58d |
| TAEXELCU120008 | Lighting Pole Installation with Luminares | 2027-05-15 → 2027-05-13 (-2d) | 2027-05-26 → 2027-05-25 (-1d) |  | 57.96d → 58.58d |
| 1 | **Telecommunication Works** | 2027-04-25 → 2027-05-02 (+7d) | 2027-08-08 → 2027-08-11 (+3d) |  |  |
| TAEXTCCU120001 | Trench Cut off | 2027-04-25 → 2027-05-02 (+7d) | 2027-05-12 → 2027-05-19 (+7d) |  | -17.61d → -23.61d |
| TAEXTCCU120002 | Drawpit and PVC Pipes Installation | 2027-07-04 → 2027-07-07 (+3d) | 2027-07-14 → 2027-07-18 (+4d) |  | -20.27d → -23.61d |
| TAEXTCCU120003 | Road Crossing Ducts | 2027-07-14 → 2027-07-18 (+4d) | 2027-07-19 → 2027-07-22 (+3d) |  | -6.27d → -9.61d |
| TAEXTCCU120004 | Trench Backfilling | 2027-07-19 → 2027-07-22 (+3d) | 2027-08-08 → 2027-08-11 (+3d) |  | -6.27d → -9.61d |

| ID | Task | Start | Finish | Total float |
| --- | --- | --- | --- | --- |
| 15 | **CCTV Works** | 2027-04-11 → 2027-04-18 (+7d) | 2027-06-06 → 2027-06-13 (+7d) |  |
| TAEXCCCU120001 | Pipe Installation with manhole | 2027-04-11 → 2027-04-18 (+7d) | 2027-04-24 → 2027-05-01 (+7d) | -14.55d → -20.55d |
| TAEXCCCU120002 | CCTV Swiches Lighting panels Installation | 2027-04-24 → 2027-05-01 (+7d) | 2027-05-08 → 2027-05-15 (+7d) | 57.45d → 51.45d |
| TAEXCCCU120003 | Cable laying and connected with Panels | 2027-05-08 → 2027-05-15 (+7d) | 2027-05-20 → 2027-05-27 (+7d) | 57.45d → 51.45d |
| TAEXCCCU120004 | Pole Installation with IP Outdoor CCTV POE Camera | 2027-05-20 → 2027-05-27 (+7d) | 2027-06-06 → 2027-06-13 (+7d) | 57.45d → 51.45d |
| 2 | **Potable Networks** | 2026-11-14 → 2026-11-21 (+7d) | 2027-03-21 → 2027-03-28 (+7d) |  |
| TAEXPTCU120001 | Excavation works for Trench | 2026-11-14 → 2026-11-21 (+7d) | 2026-11-28 → 2026-12-05 (+7d) | 62.04d → 56.04d |
| TAEXPTCU120002 | Bedding Works | 2026-11-28 → 2026-12-05 (+7d) | 2026-11-30 → 2026-12-07 (+7d) | 101.04d → 95.04d |
| TAEXPTCU120003 | Install Pipes & Fittings | 2027-01-05 → 2027-01-12 (+7d) | 2027-01-14 → 2027-01-21 (+7d) | 70.04d → 64.04d |
| TAEXPTCU120004 | Backfilling Works for Trench | 2027-01-14 → 2027-01-21 (+7d) | 2027-02-04 → 2027-02-11 (+7d) | 70.04d → 64.04d |
| TAEXPTCU120005 | Install Valves with fittings | 2027-01-31 → 2027-02-07 (+7d) | 2027-02-04 → 2027-02-11 (+7d) | 70.04d → 64.04d |
| TAEXPTCU120006 | Install fire hydrent | 2027-02-04 → 2027-02-11 (+7d) | 2027-02-15 → 2027-02-22 (+7d) | 70.04d → 64.04d |
| TAEXPTCU120007 | Valve Chamber works | 2027-02-24 → 2027-03-03 (+7d) | 2027-03-15 → 2027-03-22 (+7d) | 62.04d → 56.04d |
| TAEXPTCU120008 | Inspection Test | 2027-03-15 → 2027-03-22 (+7d) | 2027-03-21 → 2027-03-28 (+7d) | 117.14d → 111.14d |
| 3 | **TSE Networks** |  | 2027-06-06 → 2027-06-13 (+7d) |  |
| TAEXTSCU120005 | Install Valves with fittings |  | 2027-05-16 → 2027-05-23 (+7d) | 51.42d → 45.42d |
| TAEXTSCU120006 | Valve Chamber works |  | 2027-05-31 → 2027-06-07 (+7d) | 51.42d → 45.42d |
| TAEXTSCU120001 | Excavation works for Trench | 2027-01-19 → 2027-01-26 (+7d) | 2027-02-14 → 2027-02-21 (+7d) | 51.42d → 45.42d |
| TAEXTSCU120002 | Bedding Works | 2027-02-14 → 2027-02-21 (+7d) | 2027-02-16 → 2027-02-23 (+7d) | 101.42d → 95.42d |
| TAEXTSCU120003 | Install Pipes & Fittings | 2027-04-15 → 2027-04-22 (+7d) | 2027-04-25 → 2027-05-02 (+7d) | 51.42d → 45.42d |
| TAEXTSCU120004 | Backfilling Works for Trench | 2027-04-25 → 2027-05-02 (+7d) | 2027-05-16 → 2027-05-23 (+7d) | 51.42d → 45.42d |
| TAEXTSCU120007 | Inspection Test | 2027-05-31 → 2027-06-07 (+7d) | 2027-06-06 → 2027-06-13 (+7d) | 51.42d → 45.42d |
| 12 | **Sewerage Networks** | 2026-11-11 → 2026-11-17 (+6d) | 2027-01-24 → 2027-01-30 (+6d) |  |
| TAEXSWCU120001 | Excavation works for Trench | 2026-11-11 → 2026-11-17 (+6d) | 2026-11-30 → 2026-12-06 (+6d) | 131.68d → 139.63d |
| TAEXSWCU120002 | Bedding Works | 2026-11-30 → 2026-12-06 (+6d) | 2026-12-05 → 2026-12-10 (+5d) | 160.68d → 155.08d |
| TAEXSWCU120003 | Install GRP Pipes & Fittings | 2026-12-05 → 2026-12-10 (+5d) | 2026-12-21 → 2026-12-27 (+6d) | 160.68d → 155.08d |
| TAEXSWCU120004 | Backfilling Works for Trench | 2026-12-23 → 2026-12-29 (+6d) | 2027-01-07 → 2027-01-13 (+6d) | 160.68d → 155.08d |
| TAEXSWCU120005 | Manhole Installation with backfilling | 2027-01-05 → 2027-01-11 (+6d) | 2027-01-19 → 2027-01-25 (+6d) | 160.68d → 155.08d |
| TAEXSWCU120006 | Leakage Test | 2027-01-19 → 2027-01-25 (+6d) | 2027-01-24 → 2027-01-30 (+6d) | 160.68d → 155.08d |
| 4 | **Storm Networks** | 2027-05-26 → 2027-05-12 (-14d) | 2027-08-12 → 2027-07-29 (-14d) |  |
| TAEXSTCU120001 | Excavation works for Trench | 2027-05-26 → 2027-05-12 (-14d) | 2027-06-16 → 2027-06-02 (-14d) | 0.97d → 12.79d |
| TAEXSTCU120002 | Bedding Works | 2027-06-16 → 2027-06-02 (-14d) | 2027-06-21 → 2027-06-07 (-14d) | 0.97d → 12.79d |
| TAEXSTCU120003 | Install GRP Pipes & Fittings | 2027-06-21 → 2027-06-07 (-14d) | 2027-07-07 → 2027-06-23 (-14d) | 0.97d → 12.79d |
| TAEXSTCU120004 | Backfilling Works for Trench | 2027-07-10 → 2027-06-26 (-14d) | 2027-07-25 → 2027-07-11 (-14d) | 0.97d → 12.79d |
| TAEXSTCU120005 | Manhole Installation with backfilling | 2027-07-11 → 2027-06-27 (-14d) | 2027-07-25 → 2027-07-11 (-14d) | 0.97d → 12.79d |
| TAEXSTCU120006 | Install Catch Basin with UPVC Pipes & Fittings | 2027-07-25 → 2027-07-11 (-14d) | 2027-08-08 → 2027-07-25 (-14d) | 0.97d → 12.79d |
| TAEXSTCU120007 | Leakage Test | 2027-08-08 → 2027-07-25 (-14d) | 2027-08-12 → 2027-07-29 (-14d) | 0.97d → 12.79d |
| TAEXELCU140001 | Trench Cut off |  | 2027-07-27 → 2027-07-26 (-1d) | -29.3d → -28.68d |
| TAEXELCU140005 | Cables Pulling |  | 2027-08-22 → 2027-08-21 (-1d) | -6.09d → -5.47d |
| TAEXELCU140002 | Drawpit and PVC Pipes Installation | 2027-07-27 → 2027-07-26 (-1d) | 2027-08-03 → 2027-08-02 (-1d) | -11.25d → -10.63d |
| TAEXELCU140003 | Road Crossing Ducts | 2027-08-03 → 2027-08-02 (-1d) | 2027-08-07 → 2027-08-05 (-2d) | -6.09d → -5.47d |
| TAEXELCU140006 | Poles RC Foundation | 2027-08-03 → 2027-08-02 (-1d) | 2027-08-08 → 2027-08-07 (-1d) | -11.25d → -10.63d |
| TAEXELCU140004 | Trench Backfilling | 2027-08-07 → 2027-08-05 (-2d) | 2027-08-18 → 2027-08-17 (-1d) | -6.09d → -5.47d |
| TAEXELCU140008 | Lighting Pole Installation with Luminares | 2027-08-08 → 2027-08-07 (-1d) | 2027-08-15 → 2027-08-14 (-1d) | -11.25d → -10.63d |
| 22 | **CCTV Works** | 2027-06-27 → 2027-07-04 (+7d) | 2027-08-09 → 2027-08-16 (+7d) |  |
| TAEXCCCU140001 | Pipe Installation with manhole | 2027-06-27 → 2027-07-04 (+7d) | 2027-07-05 → 2027-07-12 (+7d) | -14.55d → -20.55d |
| TAEXCCCU140002 | CCTV Swiches Lighting panels Installation | 2027-07-05 → 2027-07-12 (+7d) | 2027-07-19 → 2027-07-26 (+7d) | -14.55d → -20.55d |
| TAEXCCCU140003 | Cable laying and connected with Panels | 2027-07-19 → 2027-07-26 (+7d) | 2027-07-28 → 2027-08-04 (+7d) | 2.45d → -3.55d |
| TAEXCCCU140004 | Pole Installation with IP Outdoor CCTV POE Camera | 2027-07-28 → 2027-08-04 (+7d) | 2027-08-09 → 2027-08-16 (+7d) | 2.45d → -3.55d |
| 12 | **Upgrade Local 18** | 2027-07-15 → 2027-07-22 (+7d) | 2027-08-18 → 2027-08-25 (+7d) |  |
| 27 | **CCTV Works** | 2027-07-15 → 2027-07-22 (+7d) | 2027-08-18 → 2027-08-25 (+7d) |  |
| TAEXCCCU180001 | Pipe Installation with manhole | 2027-07-15 → 2027-07-22 (+7d) | 2027-07-25 → 2027-08-01 (+7d) | -5.55d → -11.55d |
| TAEXCCCU180002 | CCTV Swiches Lighting panels Installation | 2027-07-25 → 2027-08-01 (+7d) | 2027-08-04 → 2027-08-11 (+7d) | -5.55d → -11.55d |
| TAEXCCCU180003 | Cable laying and connected with Panels | 2027-08-04 → 2027-08-11 (+7d) | 2027-08-12 → 2027-08-19 (+7d) | -5.55d → -11.55d |
| TAEXCCCU180004 | Pole Installation with IP Outdoor CCTV POE Camera | 2027-08-12 → 2027-08-19 (+7d) | 2027-08-18 → 2027-08-25 (+7d) | -5.55d → -11.55d |
| TAEXELCU200001 | Trench Cut off |  | 2027-04-01 → 2027-03-31 (-1d) | -29.3d → -28.68d |
| TAEXELCU200005 | Cables Pulling |  | 2027-05-09 → 2027-05-10 (+1d) | 70.26d → 69.06d |
| TAEXELCU200004 | Trench Backfilling |  | 2027-05-08 → 2027-05-09 (+1d) | 70.26d → 69.06d |
| TAEXELCU200002 | Drawpit and PVC Pipes Installation |  | 2027-04-24 → 2027-04-25 (+1d) | 69.22d → 68.02d |
| TAEXELCU200003 | Road Crossing Ducts |  | 2027-04-28 → 2027-04-29 (+1d) | 70.26d → 69.06d |
| TAEXELCU200006 | Poles RC Foundation | 2027-04-24 → 2027-04-25 (+1d) | 2027-05-02 → 2027-05-03 (+1d) | 69.22d → 68.02d |
| TAEXELCU200008 | Lighting Pole Installation with Luminares | 2027-05-02 → 2027-05-03 (+1d) | 2027-05-12 → 2027-05-13 (+1d) | 69.22d → 68.02d |
| TAEXELCU200009 | Install Substation & RMU | 2027-05-09 → 2027-05-10 (+1d) | 2027-05-19 → 2027-05-20 (+1d) | 70.26d → 69.06d |
| 14 | **CCTV Works** | 2027-03-09 → 2027-03-16 (+7d) | 2027-08-29 → 2027-09-04 (+6d) |  |
| TAEXCCCU200001 | Pipe Installation with manhole | 2027-03-09 → 2027-03-16 (+7d) | 2027-03-21 → 2027-03-28 (+7d) | -14.55d → -20.55d |
| TAEXCCCU200002 | CCTV Swiches Lighting panels Installation | 2027-07-19 → 2027-07-26 (+7d) | 2027-08-03 → 2027-08-10 (+7d) | -14.55d → -20.55d |
| TAEXCCCU200003 | Cable laying and connected with Panels | 2027-08-03 → 2027-08-10 (+7d) | 2027-08-15 → 2027-08-22 (+7d) | -14.55d → -20.55d |
| TAEXCCCU200004 | Pole Installation with IP Outdoor CCTV POE Camera | 2027-08-15 → 2027-08-22 (+7d) | 2027-08-29 → 2027-09-04 (+6d) | -14.55d → -20.55d |
| 1 | **Potable Networks** | 2026-10-19 → 2026-10-26 (+7d) | 2027-01-14 → 2027-01-21 (+7d) |  |
| TAEXPTCU200007 | Valve Chamber works | 2026-10-19 → 2026-10-26 (+7d) | 2026-11-07 → 2026-11-14 (+7d) | 117.9d → 111.9d |

| ID | Task | Start | Finish | Total float |
| --- | --- | --- | --- | --- |
| TAEXPTCU200008 | Inspection Test | 2026-11-08 → 2026-11-15 (+7d) | 2026-11-12 → 2026-11-19 (+7d) | 227d → 221d |
| TAEXPTCU200001 | Excavation works for Trench | 2026-11-28 → 2026-12-05 (+7d) | 2026-12-08 → 2026-12-15 (+7d) | 62.04d → 56.04d |
| TAEXPTCU200002 | Bedding Works | 2026-12-08 → 2026-12-15 (+7d) | 2026-12-10 → 2026-12-17 (+7d) | 63.04d → 57.04d |
| TAEXPTCU200003 | Install Pipes & Fittings | 2026-12-10 → 2026-12-17 (+7d) | 2026-12-20 → 2026-12-27 (+7d) | 63.04d → 57.04d |
| TAEXPTCU200004 | Backfilling Works for Trench | 2026-12-20 → 2026-12-27 (+7d) | 2027-01-07 → 2027-01-14 (+7d) | 168.14d → 162.14d |
| TAEXPTCU200005 | Install Valves with fittings | 2027-01-03 → 2027-01-10 (+7d) | 2027-01-07 → 2027-01-14 (+7d) | 168.14d → 162.14d |
| TAEXPTCU200006 | Install fire hydrent | 2027-01-07 → 2027-01-14 (+7d) | 2027-01-14 → 2027-01-21 (+7d) | 168.14d → 162.14d |
| 2 | **TSE Networks** | 2027-02-14 → 2027-02-21 (+7d) | 2027-05-04 → 2027-05-11 (+7d) |  |
| TAEXTSCU200001 | Excavation works for Trench | 2027-02-14 → 2027-02-21 (+7d) | 2027-03-09 → 2027-03-16 (+7d) | 51.42d → 45.42d |
| TAEXTSCU200002 | Bedding Works | 2027-03-09 → 2027-03-16 (+7d) | 2027-03-11 → 2027-03-18 (+7d) | 68.42d → 62.42d |
| TAEXTSCU200003 | Install Pipes & Fittings | 2027-03-11 → 2027-03-18 (+7d) | 2027-03-21 → 2027-03-28 (+7d) | 68.42d → 62.42d |
| TAEXTSCU200004 | Backfilling Works for Trench | 2027-03-21 → 2027-03-28 (+7d) | 2027-04-08 → 2027-04-15 (+7d) | 79.92d → 73.92d |
| TAEXTSCU200005 | Install Valves with fittings | 2027-04-04 → 2027-04-11 (+7d) | 2027-04-08 → 2027-04-15 (+7d) | 79.92d → 73.92d |
| TAEXTSCU200006 | Valve Chamber works | 2027-04-08 → 2027-04-15 (+7d) | 2027-04-28 → 2027-05-05 (+7d) | 79.92d → 73.92d |
| TAEXTSCU200007 | Inspection Test | 2027-04-28 → 2027-05-05 (+7d) | 2027-05-04 → 2027-05-11 (+7d) | 79.92d → 73.92d |
| 3 | **Sewerage Networks** | 2026-11-30 → 2026-12-06 (+6d) | 2027-02-07 → 2027-02-13 (+6d) |  |
| TAEXSWCU200001 | Excavation works for Trench | 2026-11-30 → 2026-12-06 (+6d) | 2026-12-17 → 2026-12-23 (+6d) | 131.68d → 139.63d |
| TAEXSWCU200002 | Bedding Works | 2026-12-17 → 2026-12-23 (+6d) | 2026-12-21 → 2026-12-27 (+6d) | 148.68d → 143.08d |
| TAEXSWCU200003 | Install GRP Pipes & Fittings | 2026-12-21 → 2026-12-27 (+6d) | 2027-01-04 → 2027-01-10 (+6d) | 148.68d → 143.08d |
| TAEXSWCU200004 | Backfilling Works for Trench | 2027-01-02 → 2027-01-07 (+5d) | 2027-01-21 → 2027-01-27 (+6d) | 148.68d → 143.08d |
| TAEXSWCU200005 | Manhole Installation with backfilling | 2027-01-14 → 2027-01-20 (+6d) | 2027-02-02 → 2027-02-08 (+6d) | 148.68d → 143.08d |
| TAEXSWCU200006 | Leakage Test | 2027-02-02 → 2027-02-08 (+6d) | 2027-02-07 → 2027-02-13 (+6d) | 148.68d → 143.08d |
| 25 | **Road Works** |  | 2027-05-22 → 2027-05-16 (-6d) |  |
| TAEXRDCU290002 | MBC1 layer | 2027-03-07 → 2027-03-01 (-6d) | 2027-03-08 → 2027-03-02 (-6d) | 28.96d → 33.61d |
| TAEXRDCU290003 | BBC Base Course | 2027-03-08 → 2027-03-02 (-6d) | 2027-03-13 → 2027-03-07 (-6d) | 28.96d → 33.61d |
| TAEXRDCU290005 | Precast Concret Kerps | 2027-03-13 → 2027-03-07 (-6d) | 2027-03-24 → 2027-03-18 (-6d) | 28.96d → 33.61d |
| TAEXRDCU290004 | BWC Asphalt Wearing Course with RC | 2027-03-24 → 2027-03-18 (-6d) | 2027-03-28 → 2027-03-22 (-6d) | 62.96d → 67.61d |
| TAEXRDCU290006 | Precast Interlock Works | 2027-05-08 → 2027-05-02 (-6d) | 2027-05-17 → 2027-05-11 (-6d) | 62.96d → 67.61d |
| TAEXRDCU290007 | Stone Paving works | 2027-05-17 → 2027-05-11 (-6d) | 2027-05-19 → 2027-05-13 (-6d) | 62.96d → 67.61d |
| TAEXRDCU290008 | Road Marking | 2027-05-19 → 2027-05-13 (-6d) | 2027-05-20 → 2027-05-15 (-5d) | 62.96d → 67.61d |
| TAEXRDCU290009 | Traffic Sinage | 2027-05-20 → 2027-05-15 (-5d) | 2027-05-22 → 2027-05-16 (-6d) | 62.96d → 67.61d |
| 20 | **Electrical Works** | 2027-07-07 → 2027-07-06 (-1d) |  |  |
| TAEXELCU290001 | Trench Cut off | 2027-07-07 → 2027-07-06 (-1d) | 2027-07-19 → 2027-07-18 (-1d) | -29.3d → -28.68d |
| TAEXELCU290002 | Drawpit and PVC Pipes Installation | 2027-07-19 → 2027-07-18 (-1d) | 2027-07-26 → 2027-07-25 (-1d) | -4.15d → -3.53d |
| TAEXELCU290003 | Road Crossing Ducts | 2027-07-26 → 2027-07-25 (-1d) | 2027-07-29 → 2027-07-28 (-1d) | 5.85d → 6.47d |
| TAEXELCU290006 | Poles RC Foundation | 2027-07-26 → 2027-07-25 (-1d) | 2027-07-31 → 2027-07-29 (-2d) | -4.15d → -3.53d |
| TAEXELCU290004 | Trench Backfilling | 2027-07-29 → 2027-07-28 (-1d) | 2027-08-10 → 2027-08-09 (-1d) | 5.85d → 6.47d |
| TAEXELCU290008 | Lighting Pole Installation with Luminares | 2027-07-31 → 2027-07-29 (-2d) | 2027-08-07 → 2027-08-05 (-2d) | -4.15d → -3.53d |
| TAEXELCU290005 | Cables Pulling | 2027-08-10 → 2027-08-09 (-1d) | 2027-08-15 → 2027-08-14 (-1d) | 5.85d → 6.47d |
| 1 | **Telecommunication Works** | 2027-06-26 → 2027-07-03 (+7d) | 2027-08-05 → 2027-08-09 (+4d) |  |
| TAEXTCCU290001 | Trench Cut off | 2027-06-26 → 2027-07-03 (+7d) | 2027-07-07 → 2027-07-14 (+7d) | -14.61d → -20.61d |
| TAEXTCCU290002 | Drawpit and PVC Pipes Installation | 2027-07-14 → 2027-07-18 (+4d) | 2027-07-21 → 2027-07-25 (+4d) | -20.27d → -23.61d |
| TAEXTCCU290003 | Road Crossing Ducts | 2027-07-21 → 2027-07-25 (+4d) | 2027-07-25 → 2027-07-28 (+3d) | -4.27d → -7.61d |
| TAEXTCCU290004 | Trench Backfilling | 2027-07-25 → 2027-07-28 (+3d) | 2027-08-05 → 2027-08-09 (+4d) | -4.27d → -7.61d |
| 21 | **CCTV Works** | 2027-06-19 → 2027-06-26 (+7d) | 2027-07-31 → 2027-08-07 (+7d) |  |
| TAEXCCCU290001 | Pipe Installation with manhole | 2027-06-19 → 2027-06-26 (+7d) | 2027-06-27 → 2027-07-04 (+7d) | -14.55d → -20.55d |
| TAEXCCCU290002 | CCTV Swiches Lighting panels Installation | 2027-06-27 → 2027-07-04 (+7d) | 2027-07-08 → 2027-07-15 (+7d) | 0.45d → -5.55d |
| TAEXCCCU290003 | Cable laying and connected with Panels | 2027-07-08 → 2027-07-15 (+7d) | 2027-07-19 → 2027-07-26 (+7d) | 10.45d → 4.45d |
| TAEXCCCU290004 | Pole Installation with IP Outdoor CCTV POE Camera | 2027-07-19 → 2027-07-26 (+7d) | 2027-07-31 → 2027-08-07 (+7d) | 10.45d → 4.45d |
| 2 | **Potable Networks** |  | 2027-06-05 → 2027-06-12 (+7d) |  |
| TAEXPTCU290007 | Valve Chamber works | 2027-05-18 → 2027-05-25 (+7d) | 2027-06-05 → 2027-06-12 (+7d) | 62.04d → 56.04d |
| 3 | **TSE Networks** |  | 2027-04-25 → 2027-05-02 (+7d) |  |
| TAEXTSCU290006 | Valve Chamber works | 2027-04-07 → 2027-04-14 (+7d) | 2027-04-25 → 2027-05-02 (+7d) | 87.92d → 81.92d |
| 17 | **Electrical Works** | 2027-04-01 → 2027-03-31 (-1d) |  |  |
| TAEXELCU320001 | Trench Cut off | 2027-04-01 → 2027-03-31 (-1d) | 2027-04-14 → 2027-04-13 (-1d) | -29.3d → -28.68d |
| TAEXELCU320002 | Drawpit and PVC Pipes Installation | 2027-04-14 → 2027-04-17 (+3d) | 2027-04-19 → 2027-04-21 (+2d) | 73.05d → 71.85d |
| TAEXELCU320003 | Road Crossing Ducts | 2027-04-19 → 2027-04-21 (+2d) | 2027-05-03 → 2027-05-05 (+2d) | 76.05d → 74.85d |
| TAEXELCU320006 | Poles RC Foundation | 2027-04-19 → 2027-04-21 (+2d) | 2027-04-27 → 2027-04-29 (+2d) | 73.05d → 71.85d |
| TAEXELCU320008 | Lighting Pole Installation with Luminares | 2027-04-27 → 2027-04-29 (+2d) | 2027-05-08 → 2027-05-10 (+2d) | 73.05d → 71.85d |
| TAEXELCU320004 | Trench Backfilling | 2027-05-03 → 2027-05-05 (+2d) | 2027-05-22 → 2027-05-24 (+2d) | 76.05d → 74.85d |
| TAEXELCU320005 | Cables Pulling | 2027-05-22 → 2027-05-24 (+2d) | 2027-05-26 → 2027-05-29 (+3d) | 76.05d → 74.85d |
| 4 | **Telecommunication Works** | 2027-03-21 → 2027-03-28 (+7d) | 2027-08-31 → 2027-09-03 (+3d) |  |
| TAEXCCCU320001 | Pipe Installation with manhole | 2027-03-21 → 2027-03-28 (+7d) | 2027-04-01 → 2027-04-08 (+7d) | -14.55d → -20.55d |
| TAEXCCCU320002 | CCTV Swiches Lighting panels Installation | 2027-07-21 → 2027-07-25 (+4d) | 2027-08-05 → 2027-08-09 (+4d) | -20.27d → -23.61d |
| TAEXCCCU320003 | Cable laying and connected with Panels | 2027-08-05 → 2027-08-09 (+4d) | 2027-08-17 → 2027-08-21 (+4d) | -16.27d → -19.61d |
| TAEXCCCU320004 | Pole Installation with IP Outdoor CCTV POE Camera | 2027-08-17 → 2027-08-21 (+4d) | 2027-08-31 → 2027-09-03 (+3d) | -16.27d → -19.61d |
| 16 | **Potable Networks** | 2026-11-08 → 2026-11-15 (+7d) | 2027-01-25 → 2027-02-01 (+7d) |  |
| TAEXPTCU320007 | Valve Chamber works | 2026-11-08 → 2026-11-15 (+7d) | 2026-11-26 → 2026-12-03 (+7d) | 117.9d → 111.9d |
| TAEXPTCU320008 | Inspection Test | 2026-11-28 → 2026-12-05 (+7d) | 2026-12-02 → 2026-12-09 (+7d) | 205d → 199d |
| TAEXPTCU320001 | Excavation works for Trench | 2026-12-08 → 2026-12-15 (+7d) | 2026-12-19 → 2026-12-26 (+7d) | 62.04d → 56.04d |

| ID | Task | Start | Finish | Complete | Total float |
| --- | --- | --- | --- | --- | --- |
| TAEXPTCU320002 | Bedding Works | 2026-12-19 → 2026-12-26 (+7d) | 2026-12-21 → 2026-12-28 (+7d) |  | 62.04d → 56.04d |
| TAEXPTCU320003 | Install Pipes & Fittings | 2026-12-21 → 2026-12-28 (+7d) | 2026-12-30 → 2027-01-06 (+7d) |  | 62.04d → 56.04d |
| TAEXPTCU320004 | Backfilling Works for Trench | 2026-12-30 → 2027-01-06 (+7d) | 2027-01-18 → 2027-01-25 (+7d) |  | 62.04d → 56.04d |
| TAEXPTCU320005 | Install Valves with fittings | 2027-01-13 → 2027-01-20 (+7d) | 2027-01-18 → 2027-01-25 (+7d) |  | 62.04d → 56.04d |
| TAEXPTCU320006 | Install fire hydrent | 2027-01-18 → 2027-01-25 (+7d) | 2027-01-25 → 2027-02-01 (+7d) |  | 62.04d → 56.04d |
| 1 | **TSE Networks** |  | 2027-05-04 → 2027-05-11 (+7d) |  |  |
| TAEXTSCU320005 | Install Valves with fittings |  | 2027-04-08 → 2027-04-15 (+7d) |  | 79.92d → 73.92d |
| TAEXTSCU320004 | Backfilling Works for Trench | 2027-03-21 → 2027-03-28 (+7d) | 2027-04-08 → 2027-04-15 (+7d) |  | 79.92d → 73.92d |
| TAEXTSCU320006 | Valve Chamber works | 2027-04-08 → 2027-04-15 (+7d) | 2027-04-28 → 2027-05-05 (+7d) |  | 79.92d → 73.92d |
| TAEXTSCU320007 | Inspection Test | 2027-04-28 → 2027-05-05 (+7d) | 2027-05-04 → 2027-05-11 (+7d) |  | 79.92d → 73.92d |
| 3 | **Storm Networks** | 2027-04-14 → 2027-04-13 (-1d) | 2027-06-27 → 2027-06-26 (-1d) |  |  |
| TAEXSTCU320001 | Excavation works for Trench | 2027-04-14 → 2027-04-13 (-1d) | 2027-04-26 → 2027-04-25 (-1d) |  | 0.97d → 12.79d |
| TAEXSTCU320002 | Bedding Works | 2027-04-26 → 2027-04-25 (-1d) | 2027-04-29 → 2027-04-28 (-1d) |  | 18.97d → 19.59d |
| TAEXSTCU320003 | Install GRP Pipes & Fittings | 2027-04-29 → 2027-04-28 (-1d) | 2027-05-06 → 2027-05-05 (-1d) |  | 18.97d → 19.59d |
| TAEXSTCU320004 | Backfilling Works for Trench | 2027-05-04 → 2027-05-03 (-1d) | 2027-05-24 → 2027-05-23 (-1d) |  | 18.97d → 19.59d |
| TAEXSTCU320005 | Manhole Installation with backfilling | 2027-05-17 → 2027-05-16 (-1d) | 2027-06-05 → 2027-06-03 (-2d) |  | 18.97d → 19.59d |
| TAEXSTCU320006 | Install Catch Basin with UPVC Pipes & Fittings | 2027-06-05 → 2027-06-03 (-2d) | 2027-06-22 → 2027-06-21 (-1d) |  | 18.97d → 19.59d |
| TAEXSTCU320007 | Leakage Test | 2027-06-22 → 2027-06-21 (-1d) | 2027-06-27 → 2027-06-26 (-1d) |  | 40.97d → 41.59d |
| 27 | **Road Works** | 2027-05-19 → 2027-05-13 (-6d) | 2027-06-15 → 2027-06-09 (-6d) |  |  |
| TAEXRDCU330002 | Precast Concret Kerps | 2027-05-19 → 2027-05-13 (-6d) | 2027-05-31 → 2027-05-25 (-6d) |  | 41.96d → 46.61d |
| TAEXRDCU330001 | BWC Asphalt Wearing Course with RC | 2027-05-31 → 2027-05-25 (-6d) | 2027-06-01 → 2027-05-26 (-6d) |  | 41.96d → 46.61d |
| TAEXRDCU330003 | Precast Interlock Works | 2027-06-01 → 2027-05-26 (-6d) | 2027-06-10 → 2027-06-05 (-5d) |  | 41.96d → 46.61d |
| TAEXRDCU330004 | Stone Paving works | 2027-06-10 → 2027-06-05 (-5d) | 2027-06-13 → 2027-06-07 (-6d) |  | 41.96d → 46.61d |
| TAEXRDCU330005 | Road Marking | 2027-06-13 → 2027-06-07 (-6d) | 2027-06-14 → 2027-06-08 (-6d) |  | 41.96d → 46.61d |
| TAEXRDCU330006 | Traffic Sinage | 2027-06-14 → 2027-06-08 (-6d) | 2027-06-15 → 2027-06-09 (-6d) |  | 41.96d → 46.61d |
| 18 | **Electrical Works** | 2027-04-14 → 2027-04-13 (-1d) |  |  |  |
| TAEXELCU330001 | Trench Cut off | 2027-04-14 → 2027-04-13 (-1d) | 2027-04-27 → 2027-04-26 (-1d) |  | -29.3d → -28.68d |
| TAEXELCU330002 | Drawpit and PVC Pipes Installation | 2027-04-27 → 2027-04-26 (-1d) | 2027-05-08 → 2027-05-06 (-2d) |  | 65.97d → 66.59d |
| TAEXELCU330003 | Road Crossing Ducts | 2027-05-08 → 2027-05-06 (-2d) | 2027-05-19 → 2027-05-18 (-1d) |  | 70.97d → 71.59d |
| TAEXELCU330006 | Poles RC Foundation | 2027-05-08 → 2027-05-06 (-2d) | 2027-05-12 → 2027-05-11 (-1d) |  | 65.97d → 66.59d |
| TAEXELCU330008 | Lighting Pole Installation with Luminares | 2027-05-12 → 2027-05-11 (-1d) | 2027-05-17 → 2027-05-16 (-1d) |  | 65.97d → 66.59d |
| TAEXELCU330004 | Trench Backfilling | 2027-05-19 → 2027-05-18 (-1d) | 2027-06-03 → 2027-06-02 (-1d) |  | 70.97d → 71.59d |
| TAEXELCU330005 | Cables Pulling | 2027-06-03 → 2027-06-02 (-1d) | 2027-06-07 → 2027-06-06 (-1d) |  | 70.97d → 71.59d |
| 1 | **Telecommunication Works** | 2027-04-19 → 2027-04-26 (+7d) | 2027-08-24 → 2027-08-28 (+4d) |  |  |
| TAEXTCCU330001 | Trench Cut off | 2027-04-19 → 2027-04-26 (+7d) | 2027-04-25 → 2027-05-02 (+7d) |  | -17.61d → -23.61d |
| TAEXTCCU330002 | Drawpit and PVC Pipes Installation | 2027-08-05 → 2027-08-09 (+4d) | 2027-08-10 → 2027-08-14 (+4d) |  | -20.27d → -23.61d |
| TAEXTCCU330003 | Road Crossing Ducts | 2027-08-10 → 2027-08-14 (+4d) | 2027-08-14 → 2027-08-17 (+3d) |  | -20.27d → -23.61d |
| TAEXTCCU330004 | Trench Backfilling | 2027-08-14 → 2027-08-17 (+3d) | 2027-08-24 → 2027-08-28 (+4d) |  | -20.27d → -23.61d |
| 17 | **CCTV Works** | 2027-04-01 → 2027-04-08 (+7d) | 2027-08-11 → 2027-08-18 (+7d) |  |  |
| TAEXCCCU330001 | Pipe Installation with manhole | 2027-04-01 → 2027-04-08 (+7d) | 2027-04-11 → 2027-04-18 (+7d) |  | -14.55d → -20.55d |
| TAEXCCCU330002 | CCTV Swiches Lighting panels Installation | 2027-07-08 → 2027-07-15 (+7d) | 2027-07-20 → 2027-07-27 (+7d) |  | 0.45d → -5.55d |
| TAEXCCCU330003 | Cable laying and connected with Panels | 2027-07-20 → 2027-07-27 (+7d) | 2027-07-31 → 2027-08-07 (+7d) |  | 0.45d → -5.55d |
| TAEXCCCU330004 | Pole Installation with IP Outdoor CCTV POE Camera | 2027-07-31 → 2027-08-07 (+7d) | 2027-08-11 → 2027-08-18 (+7d) |  | 0.45d → -5.55d |
| 2 | **Potable Networks** | 2026-12-19 → 2026-12-26 (+7d) | 2027-02-28 → 2027-03-07 (+7d) |  |  |
| TAEXPTCU330001 | Excavation works for Trench | 2026-12-19 → 2026-12-26 (+7d) | 2026-12-23 → 2026-12-30 (+7d) |  | 71.04d → 65.04d |
| TAEXPTCU330002 | Bedding Works | 2026-12-23 → 2026-12-30 (+7d) | 2026-12-26 → 2027-01-02 (+7d) |  | 71.04d → 65.04d |
| TAEXPTCU330003 | Install Pipes & Fittings | 2026-12-30 → 2027-01-06 (+7d) | 2027-01-05 → 2027-01-12 (+7d) |  | 67.04d → 61.04d |
| TAEXPTCU330004 | Backfilling Works for Trench | 2027-01-05 → 2027-01-12 (+7d) | 2027-01-19 → 2027-01-26 (+7d) |  | 67.04d → 61.04d |
| TAEXPTCU330005 | Install Valves with fittings | 2027-01-14 → 2027-01-21 (+7d) | 2027-01-19 → 2027-01-26 (+7d) |  | 67.04d → 61.04d |
| TAEXPTCU330006 | Install fire hydrent | 2027-01-25 → 2027-02-01 (+7d) | 2027-01-31 → 2027-02-07 (+7d) |  | 62.04d → 56.04d |
| TAEXPTCU330007 | Valve Chamber works | 2027-01-31 → 2027-02-07 (+7d) | 2027-02-24 → 2027-03-03 (+7d) |  | 62.04d → 56.04d |
| TAEXPTCU330008 | Inspection Test | 2027-02-24 → 2027-03-03 (+7d) | 2027-02-28 → 2027-03-07 (+7d) |  | 135.14d → 129.14d |
| 3 | **TSE Networks** | 2027-03-09 → 2027-03-16 (+7d) | 2027-05-20 → 2027-05-27 (+7d) |  |  |
| TAEXTSCU330001 | Excavation works for Trench | 2027-03-09 → 2027-03-16 (+7d) | 2027-04-07 → 2027-04-14 (+7d) |  | 51.42d → 45.42d |
| TAEXTSCU330002 | Bedding Works | 2027-04-07 → 2027-04-14 (+7d) | 2027-04-10 → 2027-04-17 (+7d) |  | 51.42d → 45.42d |
| TAEXTSCU330003 | Install Pipes & Fittings | 2027-04-10 → 2027-04-17 (+7d) | 2027-04-15 → 2027-04-22 (+7d) |  | 51.42d → 45.42d |
| TAEXTSCU330004 | Backfilling Works for Trench | 2027-04-15 → 2027-04-22 (+7d) | 2027-04-29 → 2027-05-06 (+7d) |  | 65.92d → 59.92d |
| TAEXTSCU330005 | Install Valves with fittings | 2027-04-25 → 2027-05-02 (+7d) | 2027-04-29 → 2027-05-06 (+7d) |  | 65.92d → 59.92d |
| TAEXTSCU330006 | Valve Chamber works | 2027-04-29 → 2027-05-06 (+7d) | 2027-05-17 → 2027-05-24 (+7d) |  | 65.92d → 59.92d |
| TAEXTSCU330007 | Inspection Test | 2027-05-17 → 2027-05-24 (+7d) | 2027-05-20 → 2027-05-27 (+7d) |  | 65.92d → 59.92d |
| 4 | **Sewerage Networks** |  | 2027-02-27 → 2027-02-17 (-10d) |  |  |
| TAEXSWCU330005 | Manhole Installation with backfilling | 2027-02-10 → 2026-10-22 A (-111d) | 2027-02-23 → 2026-10-25 A (-121d) | 0% → 100% | 131.68d → none |
| TAEXSWCU330006 | Leakage Test | 2027-02-23 → 2026-10-24 A (-122d) | 2027-02-27 → 2027-02-17 (-10d) | 0% → 85% | 131.68d → 139.63d |
| TAEXSWCU330004 | Backfilling Works for Trench | 2027-01-27 → 2027-02-02 (+6d) | 2027-02-10 → 2027-02-16 (+6d) |  | 142.68d → 139.63d |
| 5 | **Storm Networks** | 2027-05-08 → 2026-10-24 (-196d) | 2027-07-20 → 2027-07-06 (-14d) |  |  |
| TAEXSTCU330001 | Excavation works for Trench | 2027-05-08 → 2026-10-24 A (-196d) | 2027-05-26 → 2027-05-12 (-14d) | 0% → 70% | 0.97d → 12.79d |
| TAEXSTCU330002 | Bedding Works | 2027-05-26 → 2027-05-12 (-14d) | 2027-05-29 → 2027-05-15 (-14d) |  | 7.97d → 19.79d |
| TAEXSTCU330003 | Install GRP Pipes & Fittings | 2027-05-29 → 2027-05-15 (-14d) | 2027-06-06 → 2027-05-23 (-14d) |  | 7.97d → 19.79d |
| TAEXSTCU330004 | Backfilling Works for Trench | 2027-06-09 → 2027-05-26 (-14d) | 2027-06-23 → 2027-06-09 (-14d) |  | 7.97d → 19.79d |
| TAEXSTCU330005 | Manhole Installation with backfilling | 2027-06-22 → 2027-06-08 (-14d) | 2027-07-05 → 2027-06-21 (-14d) |  | 7.97d → 19.79d |

| ID | Task | Start | Finish | Total float |
| --- | --- | --- | --- | --- |
| TAEXSTCU330006 | Install Catch Basin with UPVC Pipes & Fittings | 2027-07-05 → 2027-06-21 (-14d) | 2027-07-17 → 2027-07-03 (-14d) | 7.97d → 19.59d |
| TAEXSTCU330007 | Leakage Test | 2027-07-17 → 2027-07-03 (-14d) | 2027-07-20 → 2027-07-06 (-14d) | 20.97d → 32.59d |
| 17 | **Pond** |  | 2026-12-29 → 2027-01-05 (+7d) |  |
| 21 | **Storm Water Pond** |  | 2026-12-29 → 2027-01-05 (+7d) |  |
| TAEXSTCSWP0007 | Excavation works for ponds 7th part |  | 2026-11-03 → 2026-11-10 (+7d) | 213.75d → 207.75d |
| TAEXSTCSWP0009 | Riprap Works part 1 |  | 2026-11-04 → 2026-11-11 (+7d) | 213.75d → 207.75d |
| TAEXSTCSWP0012 | Outfall structure works |  | 2026-12-29 → 2027-01-05 (+7d) | 213.75d → 207.75d |
| TAEXSTCSWP0010 | Riprap Works Part 2 |  | 2026-11-08 → 2026-11-15 (+7d) | 213.75d → 207.75d |
| TAEXSTCSWP0011 | Sand Marl Mix Ballast layer | 2026-11-08 → 2026-11-15 (+7d) | 2026-11-22 → 2026-11-29 (+7d) | 213.75d → 207.75d |
| 22 | **CLOSE OUT** | 2027-02-06 → 2027-01-31 (-6d) | 2027-10-07 → 2027-10-06 (-1d) |  |
| 3 | **Final Testing and Commmisionning** | 2027-02-06 → 2027-01-31 (-6d) | 2027-09-18 → 2027-09-25 (+7d) |  |
| 1 | **Final Test & commisionning Zone 1** |  | 2027-07-05 → 2027-06-29 (-6d) |  |
| TACOFTFT0006 | TSE Networks | 2027-03-20 → 2027-03-27 (+7d) | 2027-03-24 → 2027-03-31 (+7d) | 130.32d → 124.32d |
| TACOFTFT0005 | Potable Water Networks | 2027-04-17 → 2027-04-22 (+5d) | 2027-04-21 → 2027-04-27 (+6d) | 106.32d → 101.52d |
| TACOFTFT0003 | Telecommunications Networks | 2027-06-08 → 2027-06-10 (+2d) | 2027-06-13 → 2027-06-15 (+2d) | 55.05d → 53.85d |
| TACOFTFT0002 | Electrical NetWorks | 2027-06-17 → 2027-06-12 (-5d) | 2027-06-26 → 2027-06-20 (-6d) | 44.9d → 49.19d |
| TACOFTFT0004 | CCTV Networks | 2027-06-14 → 2027-06-21 (+7d) | 2027-06-22 → 2027-06-29 (+7d) | 53.45d → 47.45d |
| TACOFTFT0001 | Road Works | 2027-06-30 → 2027-06-24 (-6d) | 2027-07-05 → 2027-06-29 (-6d) | 17.9d → 22.19d |
| 2 | **Final Test & commisionning Zone 2** | 2027-02-06 → 2027-01-31 (-6d) | 2027-09-07 → 2027-09-14 (+7d) |  |
| TACOFTFT0015 | Sewerage Networks | 2027-02-06 → 2027-01-31 (-6d) | 2027-02-13 → 2027-02-07 (-6d) | 143.41d → 148.06d |
| TACOFTFT0016 | Storm Water Drainage Networks | 2027-03-27 → 2027-03-31 (+4d) | 2027-04-04 → 2027-04-08 (+4d) | 112.41d → 108.41d |
| TACOFTFT0013 | Potable Water Networks | 2027-03-25 → 2027-04-01 (+7d) | 2027-03-30 → 2027-04-06 (+7d) | 130.44d → 124.44d |
| TACOFTFT0014 | TSE Networks | 2027-03-28 → 2027-04-03 (+6d) | 2027-04-01 → 2027-04-07 (+6d) | 130.96d → 125.56d |
| TACOFTFT0010 | Electrical NetWorks | 2027-06-08 → 2027-06-10 (+2d) | 2027-06-16 → 2027-06-19 (+3d) | 39.05d → 37.85d |
| TACOFTFT0011 | Telecommunications Networks | 2027-06-28 → 2027-06-29 (+1d) | 2027-07-06 → 2027-07-07 (+1d) | 21.73d → 20.53d |
| TACOFTFT0009 | Road Works | 2027-07-24 → 2027-07-18 (-6d) | 2027-08-01 → 2027-07-26 (-6d) | 1.84d → 6.13d |
| TACOFTFT0012 | CCTV Networks | 2027-08-31 → 2027-09-06 (+6d) | 2027-09-07 → 2027-09-14 (+7d) | -12.55d → -18.55d |
| 3 | **Final Test & commisionning Zone 3** | 2027-03-09 → 2027-03-03 (-6d) | 2027-09-18 → 2027-09-25 (+7d) |  |
| TACOFTFT0023 | Sewerage Networks | 2027-03-09 → 2027-03-03 (-6d) | 2027-03-15 → 2027-03-09 (-6d) | 122.71d → 127.36d |
| TACOFTFT0021 | Potable Water Networks | 2027-06-05 → 2027-06-12 (+7d) | 2027-06-10 → 2027-06-17 (+7d) | 73.04d → 67.04d |
| TACOFTFT0022 | TSE Networks | 2027-06-13 → 2027-06-20 (+7d) | 2027-06-16 → 2027-06-23 (+7d) | 68.55d → 62.55d |
| TACOFTFT0024 | Storm Water Drainage Networks | 2027-08-12 → 2027-07-29 (-14d) | 2027-08-21 → 2027-08-07 (-14d) | 0.97d → 12.79d |
| TACOFTFT0017 | Road Works | 2027-08-01 → 2027-07-29 (-3d) | 2027-08-04 → 2027-08-02 (-2d) | 1.84d → 3.16d |
| TACOFTFT0019 | Telecommunications Networks | 2027-08-24 → 2027-08-28 (+4d) | 2027-09-01 → 2027-09-04 (+3d) | -20.27d → -23.61d |
| TACOFTFT0018 | Electrical NetWorks | 2027-09-04 → 2027-09-03 (-1d) | 2027-09-12 → 2027-09-11 (-1d) | -29.3d → -28.68d |
| TACOFTFT0020 | CCTV Networks | 2027-09-07 → 2027-09-14 (+7d) | 2027-09-18 → 2027-09-25 (+7d) | -12.55d → -18.55d |
| 2 | **AS BUILT DRAWINGS** | 2027-03-09 → 2027-03-03 (-6d) | 2027-09-19 → 2027-09-18 (-1d) |  |
| 1 | **AS BUILT DRAWINGS Zone 1** | 2027-03-15 → 2027-03-09 (-6d) | 2027-09-19 → 2027-09-18 (-1d) |  |
| TACOFTAD0007 | Sewerage Networks | 2027-03-15 → 2027-03-09 (-6d) | 2027-03-27 → 2027-03-21 (-6d) | 122.71d → 127.36d |
| TACOFTAD0005 | Potable Water Networks | 2027-05-24 → 2027-05-31 (+7d) | 2027-06-05 → 2027-06-12 (+7d) | 62.04d → 56.04d |
| TACOFTAD0006 | TSE Networks | 2027-06-06 → 2027-06-13 (+7d) | 2027-06-17 → 2027-06-24 (+7d) | 51.42d → 45.42d |
| TACOFTAD0008 | Storm Water Drainage Networks | 2027-08-01 → 2027-07-18 (-14d) | 2027-08-12 → 2027-07-29 (-14d) | 3.97d → 15.79d |
| TACOFTAD0001 | Road Works | 2027-08-04 → 2027-08-02 (-2d) | 2027-08-08 → 2027-08-05 (-3d) | 1.84d → 3.16d |
| TACOFTAD0003 | Telecommunications Networks | 2027-09-01 → 2027-09-04 (+3d) | 2027-09-08 → 2027-09-12 (+4d) | -20.27d → -23.61d |
| TACOFTAD0004 | CCTV Networks | 2027-08-31 → 2027-09-05 (+5d) | 2027-09-04 → 2027-09-09 (+5d) | -16.27d → -21.55d |
| TACOFTAD0002 | Electrical NetWorks | 2027-09-12 → 2027-09-11 (-1d) | 2027-09-19 → 2027-09-18 (-1d) | -29.3d → -28.68d |
| 2 | **AS BUILT DRAWINGS Zone 2** | 2027-03-09 → 2027-03-03 (-6d) | 2027-09-19 → 2027-09-18 (-1d) |  |
| TACOFTAD0015 | Sewerage Networks | 2027-03-09 → 2027-03-03 (-6d) | 2027-03-27 → 2027-03-21 (-6d) | 122.71d → 127.36d |
| TACOFTAD0013 | Potable Water Networks | 2027-05-24 → 2027-05-31 (+7d) | 2027-06-05 → 2027-06-12 (+7d) | 62.04d → 56.04d |
| TACOFTAD0014 | TSE Networks | 2027-06-06 → 2027-06-13 (+7d) | 2027-06-17 → 2027-06-24 (+7d) | 51.42d → 45.42d |
| TACOFTAD0016 | Storm Water Drainage Networks | 2027-07-26 → 2027-07-12 (-14d) | 2027-08-12 → 2027-07-29 (-14d) | 3.97d → 15.79d |
| TACOFTAD0009 | Road Works | 2027-08-08 → 2027-08-05 (-3d) | 2027-08-11 → 2027-08-09 (-2d) | 1.84d → 3.16d |
| TACOFTAD0011 | Telecommunications Networks | 2027-09-01 → 2027-09-04 (+3d) | 2027-09-08 → 2027-09-12 (+4d) | -20.27d → -23.61d |
| TACOFTAD0012 | CCTV Networks | 2027-08-31 → 2027-09-05 (+5d) | 2027-09-04 → 2027-09-09 (+5d) | -16.27d → -21.55d |
| TACOFTAD0010 | Electrical NetWorks | 2027-09-11 → 2027-09-09 (-2d) | 2027-09-19 → 2027-09-18 (-1d) | -29.3d → -28.68d |
| 3 | **AS BUILT DRAWINGS Zone 3** | 2027-03-15 → 2027-03-09 (-6d) | 2027-09-19 → 2027-09-18 (-1d) |  |
| TACOFTAD0023 | Sewerage Networks | 2027-03-15 → 2027-03-09 (-6d) | 2027-03-27 → 2027-03-21 (-6d) | 122.71d → 127.36d |
| TACOFTAD0021 | Potable Water Networks | 2027-05-24 → 2027-05-31 (+7d) | 2027-06-05 → 2027-06-12 (+7d) | 62.04d → 56.04d |
| TACOFTAD0022 | TSE Networks | 2027-06-06 → 2027-06-13 (+7d) | 2027-06-17 → 2027-06-24 (+7d) | 51.42d → 45.42d |
| TACOFTAD0024 | Storm Water Drainage Networks | 2027-08-01 → 2027-07-18 (-14d) | 2027-08-12 → 2027-07-29 (-14d) | 3.97d → 15.79d |
| TACOFTAD0017 | Road Works | 2027-08-11 → 2027-08-09 (-2d) | 2027-08-15 → 2027-08-12 (-3d) | 1.84d → 3.16d |
| TACOFTAD0020 | CCTV Networks | 2027-08-30 → 2027-09-04 (+5d) | 2027-09-04 → 2027-09-09 (+5d) | -16.27d → -21.55d |
| TACOFTAD0019 | Telecommunications Networks | 2027-09-01 → 2027-09-04 (+3d) | 2027-09-08 → 2027-09-12 (+4d) | -20.27d → -23.61d |
| TACOFTAD0018 | Electrical NetWorks | 2027-09-11 → 2027-09-09 (-2d) | 2027-09-19 → 2027-09-18 (-1d) | -29.3d → -28.68d |
| 1 | **DEMOBILIZATION** | 2027-09-19 → 2027-09-18 (-1d) | 2027-10-07 → 2027-10-06 (-1d) |  |
| TAPCDZ00000001 | Demobilization Manpower | 2027-09-19 → 2027-09-18 (-1d) | 2027-09-26 → 2027-09-25 (-1d) | -29.3d → -28.68d |
| TAPCDZ00000002 | Remove Offices and Structures | 2027-09-26 → 2027-09-25 (-1d) | 2027-10-02 → 2027-09-30 (-2d) | -29.3d → -28.68d |
| TAPCDZ00000022 | Restore Ground Surfaces | 2027-09-30 → 2027-09-29 (-1d) | 2027-10-07 → 2027-10-06 (-1d) | -29.3d → -28.68d |
| TAPCDZ00000012 | Demobilize Equipment from Site | 2027-10-02 → 2027-09-30 (-2d) | 2027-10-07 → 2027-10-06 (-1d) | -29.3d → -28.68d |
| TAPCDZ00000032 | Final Handover | 2027-10-07 → 2027-10-06 (-1d) | 2027-10-07 → 2027-10-06 (-1d) | -29.3d → -28.68d |

## Version 6 (data date 2026-11-02, saved 2026-11-03, file 2-11-2026.xer)

Last finish 2027-10-07 → 2027-10-06 (-1d). Complete tasks 601 → 639.

Changed:

| ID | Task | Start | Finish | Complete | Total float | Predecessors |
| --- | --- | --- | --- | --- | --- | --- |
| GENERAL | **MILESTONS** |  | 2027-10-07 → 2027-10-06 (-1d) |  |  |  |
| 2 | **CONTRACTUAL MILESTONES** |  | 2027-10-07 → 2027-10-06 (-1d) |  |  |  |
| TAGNCM0003 | Project finish | 2027-10-07 → 2027-10-06 (-1d) | 2027-10-07 → 2027-10-06 (-1d) |  | -29.48d → -28.35d |  |
| 1 | **NET WORK MILESTONES** |  | 2027-10-07 → 2027-10-03 (-4d) |  |  |  |
| TAGNML0008 | Start CCTV Works | 2026-10-26 → 2026-11-02 (+7d) | 2026-10-26 → 2026-11-02 (+7d) |  | -14d → -20d |  |
| TAGNML0019 | Finish Sewerage Networks | 2027-03-21 → 2027-03-14 (-7d) | 2027-03-21 → 2027-03-14 (-7d) |  | 143.36d → 149.58d |  |
| TAGNML0018 | Finish TSE Networks | 2027-06-23 → 2027-06-10 (-13d) | 2027-06-23 → 2027-06-10 (-13d) |  | 62.55d → 73.43d |  |
| TAGNML0017 | Finish Potable Water Networks | 2027-06-17 → 2027-06-21 (+4d) | 2027-06-17 → 2027-06-21 (+4d) |  | 67.04d → 64.66d |  |
| TAGNML0032 | Finish works for Amana Road | 2027-08-16 → 2027-07-21 (-26d) | 2027-08-16 → 2027-07-21 (-26d) |  | 16.13d → 38.19d |  |
| TAGNML0020 | Finish Storm Water Drainage Networks | 2027-07-29 → 2027-07-24 (-5d) | 2027-07-29 → 2027-07-24 (-5d) |  | 31.79d → 36.92d |  |
| TAGNML0015 | Finish Teleommunications Works | 2027-09-12 → 2027-08-28 (-15d) | 2027-09-12 → 2027-08-28 (-15d) |  | -7.61d → 6.39d |  |
| TAGNML0013 | Finish Road Works | 2027-10-07 → 2027-09-30 (-7d) | 2027-10-07 → 2027-09-30 (-7d) |  | -29.48d → -23.35d |  |
| TAGNML0016 | Finish CCTV Works | 2027-09-25 → 2027-10-02 (+7d) | 2027-09-25 → 2027-10-02 (+7d) |  | -18.55d → -24.55d |  |
| TAGNML0014 | Finish Electrical Works | 2027-10-04 → 2027-10-03 (-1d) | 2027-10-04 → 2027-10-03 (-1d) |  | -26.19d → -25.86d |  |
| 4 | **ZONES MILESTONES** |  | 2027-07-18 → 2027-06-22 (-26d) |  |  |  |
| TAGNZM0004 | Finish Zone 1 | 2027-06-24 → 2027-06-02 (-22d) | 2027-06-24 → 2027-06-02 (-22d) |  | 61.19d → 80.32d |  |
| TAGNZM0006 | Finish Zone 3 | 2027-06-12 → 2027-06-15 (+3d) | 2027-06-12 → 2027-06-15 (+3d) |  | 72.04d → 69.66d |  |
| TAGNZM0005 | Finish Zone 2 | 2027-07-18 → 2027-06-22 (-26d) | 2027-07-18 → 2027-06-22 (-26d) |  | 16.13d → 38.19d |  |
| 3 | **PRELIMINARY SUBMITTALS** |  | 2026-11-24 → 2026-12-01 (+7d) |  |  |  |
| TAGNPS0002 | Shop drawing complete |  | 2026-11-24 → 2026-12-01 (+7d) |  | 5.4d → 3.6d |  |
| 5 | **MOBILIZATION** |  | 2027-08-23 → 2027-08-24 (+1d) |  |  |  |
| 2 | **Site Facilites and Offices** |  | 2027-08-23 → 2027-08-24 (+1d) |  |  |  |
| TAGNMZ9 | Office Operation part 01 |  | 2027-08-23 → 2027-08-24 (+1d) | 32% → 34% | 0.01d → -0.01d |  |
| 17 | **PROCUREMENT** |  | 2027-10-07 → 2027-09-30 (-7d) |  |  |  |
| 17 | **Material Fabrication and Delivery** |  | 2027-10-07 → 2027-09-30 (-7d) |  |  |  |
| 1 | **Material Fabrication and Delivery for Road Works** |  | 2027-10-07 → 2027-09-30 (-7d) |  |  |  |
| TAPQDVRD00011 | ABC Delivery to Site Part 01 |  | 2026-12-05 → 2026-12-08 (+3d) | 52% → 55% | -29.48d → -28.35d |  |
| TAPQDVRD00021 | BBC Base Course Delivery to Site Part 01 |  | 2027-07-06 → 2027-06-10 (-26d) | 31% → 36% | 6.13d → 28.19d |  |
| TAPQDVRD00041 | Precast Concrete Curbstone Delivery to Site part 01 |  | 2027-08-01 → 2027-07-25 (-7d) |  | -29.48d → -23.35d | TAPQDVRD00011 FS+155d, TAPQDVRD0004 → TAPQDVRD00011 FS+145d, TAPQDVRD0004 |
| TAPQDVRD0003 | BWC Asphalt Wearing Course Delivery to Site | 2027-07-06 → 2027-06-10 (-26d) | 2027-08-16 → 2027-07-21 (-26d) |  | 7.13d → 29.19d |  |
| TAPQDVRD00081 | Marking for Road delivery to site Part 01 | 2027-07-06 → 2027-06-10 (-26d) | 2027-07-12 → 2027-06-16 (-26d) |  | 6.13d → 28.19d |  |
| TAPQDVRD00091 | Trafic Sinage delivery to site Part 01 | 2027-08-16 → 2027-07-21 (-26d) | 2027-08-26 → 2027-08-01 (-25d) |  | 7.13d → 29.19d |  |
| TAPQDVRD0005 | Precast Concrete Interlocking Delivery to Site | 2027-08-23 → 2027-08-16 (-7d) | 2027-10-07 → 2027-09-30 (-7d) |  | -29.48d → -23.35d |  |
| 10 | **Material Fabrication and Delivery for Electrical Works** |  | 2027-04-17 → 2027-04-07 (-10d) |  |  |  |
| TAPQDVEL0002 | cables (LV,MV )Delivery to Site) |  | 2027-01-06 → 2027-01-13 (+7d) |  | -21.47d → -9.47d |  |
| TAPQDVEL00011 | Pipes ,Fittings Delivery to Site Part 01 |  | 2026-10-28 → 2026-11-04 (+7d) |  | -23.61d → -27.55d |  |
| TAPQDVEL0003 | Poles & Luminares Delivery to Site |  | 2027-03-13 → 2027-03-03 (-10d) | 8% → 30% | -21.47d → -9.47d |  |
| TAPQDVEL0005 | Pre cast Drawpits and Pole Foundation Delivery |  | 2027-04-17 → 2027-04-07 (-10d) | 1% → 5% | -21.47d → -9.47d |  |
| 11 | **Material Fabrication and Delivery for Telecommunication** |  | 2026-11-03 → 2026-11-10 (+7d) |  |  |  |
| TAPQDVTC0001 | Telecommunication Material (Pipes,,ets) Delivery |  | 2026-11-03 → 2026-11-10 (+7d) |  | -23.61d → -27.55d |  |
| 12 | **Material Fabrication and Delivery for CCTV Networks** |  | 2026-12-08 → 2026-11-21 (-17d) |  |  |  |
| TAPQDVCC0001 | CCTV Material Cabls,Camera,Devices,ets) Delivery |  | 2026-12-08 → 2026-11-21 (-17d) | 50% → 85% | -21.55d → -27.55d |  |
| 15 | **Material Fabrication and Delivery for Sewerage Networks** |  | 2026-12-13 → 2026-12-12 (-1d) |  |  |  |
| TAPQDVSW00011 | GRP Pipes Delivery to Site Part 01 |  | 2026-11-02 → 2026-10-31 A (-2d) | 81% → 100% | 14.49d → none |  |
| TAPQDVSW00021 | Fiberglass Manholes,ets) Delivery Part 01 |  | 2026-12-13 → 2026-12-12 (-1d) |  | 14.49d → 18.2d |  |
| 16 | **Material Fabrication and Delivery for Storm Networks** |  | 2026-12-19 → 2026-11-22 (-27d) |  |  |  |
| TAPQDVST0009 | Catchbasin Delivery to Site |  | 2026-11-08 → 2026-11-14 (+6d) |  | 45.74d → 44.55d |  |
| TAPQDVST00071 | RIprab,Sand,Marl gravel Delivery for Ponds part 01 |  | 2026-11-04 → 2026-11-11 (+7d) |  | 212.4d → 206.4d |  |
| TAPQDVST00061 | Manholes,ets Delivery part 01 |  | 2026-12-19 → 2026-11-22 (-27d) |  | 9.1d → 35.56d |  |
| 1 | **CONSTRUCTION WORKS** |  | 2027-10-04 → 2027-10-03 (-1d) |  |  |  |
| 9 | **ZONE 1** |  | 2027-10-04 → 2027-10-03 (-1d) |  |  |  |
| 1 | **Collector Road 02** |  | 2027-06-24 → 2027-06-02 (-22d) |  |  |  |
| 10 | **Road Works** |  | 2027-06-24 → 2027-06-02 (-22d) |  |  |  |
| TAEXRDCC020004 | ABC aggregate Base Course Works |  | 2027-05-03 → 2027-04-13 (-20d) | 45% → 70% | 6.13d → 28.19d |  |
| TAEXRDCC020005 | MBC1 layer |  | 2027-05-04 → 2027-04-13 (-21d) |  | 6.13d → 28.19d |  |
| TAEXRDCC020006 | BBC Base Course |  | 2027-05-08 → 2027-04-17 (-21d) | 9% → 38% | 6.13d → 28.19d |  |
| TAEXRDCC0200021 | Backfilling Works for Road Part 01 |  | 2027-04-15 → 2027-04-01 (-14d) |  | 6.13d → 28.19d |  |
| TAEXRDCC0200031 | Subgrade Works Part 01 |  | 2027-04-22 → 2027-04-07 (-15d) | 25% → 35% | 6.13d → 28.19d |  |
| TAEXRDCC020008 | Precast Concret Kerps | 2027-05-08 → 2026-10-31 A (-189d) | 2027-05-20 → 2027-04-28 (-22d) | 0% → 7% | 18.19d → 37.32d |  |
| TAEXRDCC020007 | BWC Asphalt Wearing Course with RC | 2027-05-20 → 2027-04-28 (-22d) | 2027-05-23 → 2027-05-01 (-22d) |  | 22.19d → 41.32d |  |
| TAEXRDCC020009 | Precast Interlock Works | 2027-05-23 → 2027-05-01 (-22d) | 2027-06-13 → 2027-05-22 (-22d) |  | 22.19d → 41.32d |  |
| TAEXRDCC020010 | Stone Paving works | 2027-06-13 → 2027-05-22 (-22d) | 2027-06-21 → 2027-05-30 (-22d) |  | 22.19d → 41.32d |  |
| TAEXRDCC020011 | Road Marking | 2027-06-21 → 2027-05-30 (-22d) | 2027-06-23 → 2027-06-01 (-22d) |  | 22.19d → 41.32d |  |
| TAEXRDCC020012 | Traffic Sinage | 2027-06-23 → 2027-06-01 (-22d) | 2027-06-24 → 2027-06-02 (-22d) |  | 22.19d → 41.32d |  |
| 11 | **Electrical Works** |  | 2027-05-08 → 2027-04-28 (-10d) |  |  |  |
| TAEXELCC020003 | Road Crossing Ducts |  | 2027-03-09 → 2026-11-01 A (-128d) | 60% → 100% | 6.13d → none |  |
| TAEXELCC020002 | Drawpit and PVC Pipes Installation |  | 2027-03-07 → 2026-11-01 A (-126d) | 60% → 100% | 6.13d → none |  |
| TAEXELCC020001 | Trench Cut off | 2026-12-16 → 2026-12-20 (+4d) | 2027-01-09 → 2027-01-12 (+3d) |  | 50.2d → 63.19d |  |
| TAEXELCC020004 | Trench Backfilling | 2027-03-09 → 2027-02-22 (-15d) | 2027-03-30 → 2027-03-15 (-15d) |  | 6.13d → 28.19d |  |
| TAEXELCC020005 | Cables Pulling | 2027-03-30 → 2027-03-15 (-15d) | 2027-04-08 → 2027-03-24 (-15d) |  | 6.13d → 28.19d |  |

| ID | Task | Start | Finish | Complete | Total float | Predecessors |
| --- | --- | --- | --- | --- | --- | --- |
| TAEXELCC020006 | Poles RC Foundation | 2027-04-17 → 2027-04-07 (-10d) | 2027-04-24 → 2027-04-14 (-10d) |  | 42.85d → 50.05d |  |
| TAEXELCC020007 | Earthing cables | 2027-04-24 → 2027-04-14 (-10d) | 2027-05-05 → 2027-04-26 (-9d) |  | 42.85d → 50.05d |  |
| TAEXELCC020008 | Lighting Pole Installation with Luminares | 2027-04-24 → 2027-04-14 (-10d) | 2027-05-08 → 2027-04-28 (-10d) |  | 49.85d → 57.05d |  |
| 12 | **Telecommunication Works** |  | 2027-05-15 → 2027-04-28 (-17d) |  |  |  |
| TAEXTCCC020002 | Drawpit and PVC Pipes Installation |  | 2027-04-21 → 2026-11-01 A (-171d) | 50% → 100% | -21.47d → none |  |
| TAEXTCCC020003 | Road Crossing Ducts |  | 2027-04-24 → 2026-11-01 A (-174d) | 50% → 100% | 73.85d → none |  |
| TAEXTCCC020001 | Trench Cut off | 2026-10-28 → 2026-11-04 (+7d) | 2026-11-21 → 2026-11-28 (+7d) |  | -23.61d → -9.61d |  |
| TAEXTCCC020004 | Trench Backfilling | 2027-04-24 → 2027-04-07 (-17d) | 2027-05-15 → 2027-04-28 (-17d) |  | 73.85d → 87.05d |  |
| 13 | **CCTV Works** | 2027-03-04 → 2027-03-11 (+7d) | 2027-05-13 → 2027-05-20 (+7d) |  |  |  |
| TAEXCCCC020001 | Pipe Installation with manhole | 2027-03-04 → 2027-03-11 (+7d) | 2027-03-16 → 2027-03-23 (+7d) |  | -21.55d → -27.55d |  |
| TAEXCCCC020002 | CCTV Swiches Lighting panels Installation | 2027-03-16 → 2027-03-23 (+7d) | 2027-04-06 → 2027-04-13 (+7d) |  | -21.55d → -27.55d |  |
| TAEXCCCC020003 | Cable laying and connected with Panels | 2027-04-06 → 2027-04-13 (+7d) | 2027-04-22 → 2027-04-29 (+7d) |  | 77.45d → 71.45d |  |
| TAEXCCCC020004 | Pole Installation with IP Outdoor CCTV POE Camera | 2027-04-22 → 2027-04-29 (+7d) | 2027-05-13 → 2027-05-20 (+7d) |  | 77.45d → 71.45d |  |
| 16 | **Sewerage Networks** |  | 2027-01-31 → 2026-10-29 (-94d) |  |  |  |
| TAEXSWCC0200061 | Leakage Test Part 01 |  | 2027-01-31 → 2026-10-29 A (-94d) | 95% → 100% | 148.06d → none |  |
| 2 | **Collector Road 03** |  | 2027-06-12 → 2027-05-20 (-23d) |  |  |  |
| 10 | **Road Works** |  | 2027-06-05 → 2027-05-13 (-23d) |  |  |  |
| TAEXRDCC030007 | BWC Asphalt Wearing Course with RC | 2027-05-20 → 2027-04-28 (-22d) | 2027-05-23 → 2027-05-01 (-22d) |  | 31.19d → 50.32d |  |
| TAEXRDCC030009 | Precast Interlock Works | 2027-05-23 → 2027-05-01 (-22d) | 2027-05-30 → 2027-05-08 (-22d) |  | 39.19d → 58.32d |  |
| TAEXRDCC030010 | Stone Paving works | 2027-05-30 → 2027-05-08 (-22d) | 2027-06-01 → 2027-05-10 (-22d) |  | 39.19d → 58.32d |  |
| TAEXRDCC030011 | Road Marking | 2027-06-01 → 2027-05-10 (-22d) | 2027-06-02 → 2027-05-11 (-22d) |  | 39.19d → 58.32d |  |
| TAEXRDCC030012 | Traffic Sinage | 2027-06-02 → 2027-05-11 (-22d) | 2027-06-05 → 2027-05-13 (-23d) |  | 39.19d → 58.32d |  |
| 1 | **Electrical Works** |  | 2027-06-12 → 2027-05-20 (-23d) |  |  |  |
| TAEXELCC0300011 | Trench Cut off Part 01 | 2026-12-05 → 2026-12-08 (+3d) | 2026-12-16 → 2026-12-20 (+4d) |  | -28.68d → -28.35d |  |
| TAEXELCC030005 | Cables Pulling | 2027-05-20 → 2027-04-28 (-22d) | 2027-05-25 → 2027-05-03 (-22d) |  | 18.19d → 37.32d |  |
| TAEXELCC0300041 | Trench Backfilling Part 01 | 2027-05-25 → 2027-05-03 (-22d) | 2027-05-30 → 2027-05-08 (-22d) |  | 18.19d → 37.32d |  |
| TAEXELCC030006 | Poles RC Foundation | 2027-05-30 → 2027-05-08 (-22d) | 2027-06-02 → 2027-05-11 (-22d) |  | 18.19d → 37.32d |  |
| TAEXELCC030007 | Earthing cables | 2027-06-02 → 2027-05-11 (-22d) | 2027-06-05 → 2027-05-13 (-23d) |  | 18.19d → 37.32d |  |
| TAEXELCC030008 | Lighting Pole Installation with Luminares | 2027-06-02 → 2027-05-11 (-22d) | 2027-06-12 → 2027-05-20 (-23d) |  | 49.19d → 68.32d |  |
| 2 | **Telecommunication Works** | 2026-12-14 → 2026-12-21 (+7d) | 2027-05-16 → 2027-05-02 (-14d) |  |  |  |
| TAEXTCCC030001 | Trench Cut off | 2026-12-14 → 2026-12-21 (+7d) | 2026-12-26 → 2027-01-02 (+7d) |  | -23.61d → -9.61d |  |
| TAEXTCCC030002 | Drawpit and PVC Pipes Installation | 2027-04-21 → 2027-04-07 (-14d) | 2027-04-29 → 2027-04-15 (-14d) |  | -21.47d → -9.47d |  |
| TAEXTCCC030003 | Road Crossing Ducts | 2027-04-29 → 2027-04-15 (-14d) | 2027-05-02 → 2027-04-18 (-14d) |  | 72.85d → 84.05d |  |
| TAEXTCCC030004 | Trench Backfilling | 2027-05-02 → 2027-04-18 (-14d) | 2027-05-16 → 2027-05-02 (-14d) |  | 72.85d → 84.05d |  |
| 3 | **CCTV Works** | 2026-11-03 → 2026-11-10 (+7d) | 2027-05-11 → 2027-05-18 (+7d) |  |  |  |
| TAEXCCCC030001 | Pipe Installation with manhole | 2026-11-03 → 2026-11-10 (+7d) | 2026-11-11 → 2026-11-18 (+7d) |  | -21.55d → -27.55d |  |
| TAEXCCCC030002 | CCTV Swiches Lighting panels Installation | 2027-04-06 → 2027-04-13 (+7d) | 2027-04-20 → 2027-04-27 (+7d) |  | -21.55d → -27.55d |  |
| TAEXCCCC030003 | Cable laying and connected with Panels | 2027-04-20 → 2027-04-27 (+7d) | 2027-04-29 → 2027-05-06 (+7d) |  | 79.45d → 73.45d |  |
| TAEXCCCC030004 | Pole Installation with IP Outdoor CCTV POE Camera | 2027-04-29 → 2027-05-06 (+7d) | 2027-05-11 → 2027-05-18 (+7d) |  | 79.45d → 73.45d |  |
| 8 | **Upgrade local 21** |  | 2027-06-29 → 2027-06-20 (-9d) |  |  |  |
| 22 | **Road Works** | 2027-05-20 → 2027-04-28 (-22d) | 2027-06-20 → 2027-05-29 (-22d) |  |  |  |
| TAEXRDCU210002 | Precast Concret Kerps | 2027-05-20 → 2027-04-28 (-22d) | 2027-05-31 → 2027-05-09 (-22d) |  | 26.19d → 45.32d |  |
| TAEXRDCU210001 | BWC Asphalt Wearing Course with RC | 2027-05-31 → 2027-05-09 (-22d) | 2027-06-01 → 2027-05-10 (-22d) |  | 26.19d → 45.32d |  |
| TAEXRDCU210003 | Precast Interlock Works | 2027-06-01 → 2027-05-10 (-22d) | 2027-06-09 → 2027-05-18 (-22d) |  | 26.19d → 45.32d |  |
| TAEXRDCU210004 | Stone Paving works | 2027-06-09 → 2027-05-18 (-22d) | 2027-06-15 → 2027-05-24 (-22d) |  | 26.19d → 45.32d |  |
| TAEXRDCU210005 | Road Marking | 2027-06-15 → 2027-05-24 (-22d) | 2027-06-16 → 2027-05-25 (-22d) |  | 26.19d → 45.32d |  |
| TAEXRDCU210006 | Traffic Sinage | 2027-06-16 → 2027-05-25 (-22d) | 2027-06-20 → 2027-05-29 (-22d) |  | 26.19d → 45.32d |  |
| 13 | **Electrical Works** | 2026-12-16 → 2026-12-20 (+4d) | 2027-06-29 → 2027-06-20 (-9d) |  |  |  |
| TAEXELCU210001 | Trench Cut off | 2026-12-16 → 2026-12-20 (+4d) | 2026-12-31 → 2027-01-04 (+4d) |  | -28.68d → -28.35d |  |
| TAEXELCU210002 | Drawpit and PVC Pipes Installation | 2027-05-01 → 2027-04-21 (-10d) | 2027-05-15 → 2027-05-05 (-10d) |  | 6.85d → 14.05d |  |
| TAEXELCU210003 | Road Crossing Ducts | 2027-05-15 → 2027-05-05 (-10d) | 2027-05-22 → 2027-05-12 (-10d) |  | 6.85d → 14.05d |  |
| TAEXELCU210006 | Poles RC Foundation | 2027-05-15 → 2027-05-05 (-10d) | 2027-05-24 → 2027-05-15 (-9d) |  | 28.85d → 36.05d |  |
| TAEXELCU210004 | Trench Backfilling | 2027-05-22 → 2027-05-12 (-10d) | 2027-06-12 → 2027-06-02 (-10d) |  | 6.85d → 14.05d |  |
| TAEXELCU210008 | Lighting Pole Installation with Luminares | 2027-05-24 → 2027-05-15 (-9d) | 2027-06-05 → 2027-05-26 (-10d) |  | 55.85d → 63.05d |  |
| TAEXELCU210005 | Cables Pulling | 2027-06-12 → 2027-06-02 (-10d) | 2027-06-19 → 2027-06-09 (-10d) |  | 6.85d → 14.05d |  |
| TAEXELCU210007 | Earthing cables | 2027-06-19 → 2027-06-09 (-10d) | 2027-06-23 → 2027-06-14 (-9d) |  | 6.85d → 14.05d |  |
| TAEXELCU210009 | Install Substation & RMU | 2027-06-19 → 2027-06-09 (-10d) | 2027-06-29 → 2027-06-20 (-9d) |  | 35.85d → 43.05d |  |
| 1 | **Telecommunication Works** | 2027-01-18 → 2027-01-02 (-16d) | 2027-06-10 → 2027-05-27 (-14d) |  |  |  |
| TAEXTCCU210001 | Trench Cut off | 2027-01-18 → 2027-01-02 (-16d) | 2027-02-03 → 2027-01-18 (-16d) |  | -23.61d → -9.61d | TAEXTCCC030001 FS+20d → TAEXTCCC030001 |
| TAEXTCCU210002 | Drawpit and PVC Pipes Installation | 2027-04-29 → 2027-04-15 (-14d) | 2027-05-13 → 2027-04-29 (-14d) |  | -21.47d → -9.47d |  |
| TAEXTCCU210003 | Road Crossing Ducts | 2027-05-13 → 2027-04-29 (-14d) | 2027-05-20 → 2027-05-06 (-14d) |  | 50.85d → 62.05d |  |
| TAEXTCCU210004 | Trench Backfilling | 2027-05-20 → 2027-05-06 (-14d) | 2027-06-10 → 2027-05-27 (-14d) |  | 50.85d → 62.05d |  |
| 10 | **CCTV Works** | 2026-11-11 → 2026-11-18 (+7d) | 2027-06-08 → 2027-06-15 (+7d) |  |  |  |
| TAEXCCCU210001 | Pipe Installation with manhole | 2026-11-11 → 2026-11-18 (+7d) | 2026-11-28 → 2026-12-05 (+7d) |  | -21.55d → -27.55d |  |
| TAEXCCCU210002 | CCTV Swiches Lighting panels Installation | 2027-04-20 → 2027-04-27 (+7d) | 2027-05-09 → 2027-05-16 (+7d) |  | -21.55d → -27.55d |  |
| TAEXCCCU210003 | Cable laying and connected with Panels | 2027-05-09 → 2027-05-16 (+7d) | 2027-05-23 → 2027-05-30 (+7d) |  | 55.45d → 49.45d |  |
| TAEXCCCU210004 | Pole Installation with IP Outdoor CCTV POE Camera | 2027-05-23 → 2027-05-30 (+7d) | 2027-06-08 → 2027-06-15 (+7d) |  | 55.45d → 49.45d |  |
| 2 | **Potable Networks** |  | 2027-04-22 → 2027-04-10 (-12d) |  |  |  |
| TAEXPTCU210001 | Excavation works for Trench |  | 2026-11-21 → 2026-11-24 (+3d) | 78% → 87% | 56.04d → 53.66d |  |
| TAEXPTCU210005 | Install Valves with fittings |  | 2027-03-24 → 2027-03-11 (-13d) |  | 89.52d → 100.8d |  |

| ID | Task | Start | Finish | Complete | Total float |
| --- | --- | --- | --- | --- | --- |
| TAEXPTCU210007 | Valve Chamber works |  | 2027-04-17 → 2027-04-04 (-13d) |  | 89.52d → 100.8d |
| TAEXPTCU210002 | Bedding Works |  | 2027-01-28 → 2027-01-16 (-12d) | 60% → 75% | 113.72d → 127.55d |
| TAEXPTCU210003 | Install Pipes & Fittings |  | 2027-02-22 → 2027-02-06 (-16d) | 60% → 75% | 99.52d → 113.05d |
| TAEXPTCU210006 | Install fire hydrent |  | 2027-03-31 → 2027-03-18 (-13d) | 15% → 20% | 89.52d → 100.8d |
| TAEXPTCU210004 | Backfilling Works for Trench | 2027-03-06 → 2027-02-21 (-13d) | 2027-03-24 → 2027-03-11 (-13d) |  | 89.52d → 100.8d |
| TAEXPTCU210008 | Inspection Test | 2027-04-17 → 2027-04-04 (-13d) | 2027-04-22 → 2027-04-10 (-12d) |  | 89.52d → 100.8d |
| 3 | **TSE Networks** |  | 2027-03-27 → 2027-03-14 (-13d) |  |  |
| TAEXTSCU210005 | Install Valves with fittings |  | 2027-03-06 → 2027-02-21 (-13d) |  | 98.72d → 109.6d |
| TAEXTSCU210006 | Valve Chamber works |  | 2027-03-21 → 2027-03-08 (-13d) |  | 98.72d → 109.6d |
| TAEXTSCU210001 | Excavation works for Trench | 2026-12-23 → 2026-12-10 (-13d) | 2027-01-26 → 2027-01-13 (-13d) |  | 45.42d → 56.3d |
| TAEXTSCU210002 | Bedding Works | 2027-01-26 → 2027-01-13 (-13d) | 2027-01-28 → 2027-01-16 (-12d) |  | 89.52d → 100.8d |
| TAEXTSCU210003 | Install Pipes & Fittings | 2027-01-28 → 2027-01-16 (-12d) | 2027-02-15 → 2027-02-02 (-13d) |  | 89.52d → 100.8d |
| TAEXTSCU210004 | Backfilling Works for Trench | 2027-02-15 → 2027-02-02 (-13d) | 2027-03-06 → 2027-02-21 (-13d) |  | 89.52d → 100.8d |
| TAEXTSCU210007 | Inspection Test | 2027-03-21 → 2027-03-08 (-13d) | 2027-03-27 → 2027-03-14 (-13d) |  | 107.32d → 118.2d |
| 4 | **Sewerage Networks** |  | 2026-12-30 → 2026-12-22 (-8d) |  |  |
| TAEXSWCU210001 | Excavation works for Trench |  | 2026-11-17 → 2026-11-16 (-1d) |  | 139.63d → 141.38d |
| TAEXSWCU210002 | Bedding Works |  | 2026-11-18 → 2026-11-17 (-1d) | 75% → 85% | 190.58d → 195.88d |
| TAEXSWCU210003 | Install GRP Pipes & Fittings |  | 2026-11-22 → 2026-11-18 (-4d) | 75% → 85% | 190.58d → 195.88d |
| TAEXSWCU210005 | Manhole Installation with backfilling |  | 2026-12-26 → 2026-12-20 (-6d) | 30% → 55% | 186.85d → 193.85d |
| TAEXSWCU210004 | Backfilling Works for Trench |  | 2026-12-09 → 2026-12-06 (-3d) | 40% → 80% | 190.58d → 195.88d |
| TAEXSWCU210006 | Leakage Test | 2026-12-26 → 2026-10-31 A (-56d) | 2026-12-30 → 2026-12-22 (-8d) | 0% → 65% | 186.85d → 193.85d |
| 5 | **Storm Networks** |  | 2027-01-31 → 2027-01-23 (-8d) |  |  |
| TAEXSTCU210007 | Leakage Test |  | 2027-01-31 → 2027-01-23 (-8d) |  | 148.06d → 155.6d |
| TAEXSTCU2100051 | Manhole Installation with backfilling Part 01 |  | 2026-12-22 → 2026-12-03 (-19d) |  | 28.1d → 46.7d |
| TAEXSTCU2100031 | Install GRP Pipes & Fittings Part 01 |  | 2026-10-28 → 2026-11-04 (+7d) |  | 49.64d → 46.7d |
| TAEXSTCU2100041 | Backfilling Works for Trench Part 01 |  | 2026-11-15 → 2026-11-22 (+7d) |  | 49.64d → 46.7d |
| TAEXSTCU2100021 | Bedding Works Part 01 | 2026-10-26 → 2026-11-02 (+7d) | 2026-10-26 → 2026-11-02 (+7d) |  | 49.64d → 46.7d |
| TAEXSTCU210006 | Install Catch Basin with UPVC Pipes & Fittings | 2027-01-13 → 2027-01-06 (-7d) | 2027-01-30 → 2027-01-21 (-9d) |  | 9.1d → 18.2d |
| 6 | **Upgrade local 26** |  | 2027-10-04 → 2027-10-03 (-1d) |  |  |
| 14 | **Electrical Works** |  | 2027-10-04 → 2027-10-03 (-1d) |  |  |
| TAEXELCU260001 | Trench Cut off |  | 2027-01-09 → 2027-01-13 (+4d) |  | -28.68d → -28.35d |
| TAEXELCU260005 | Cables Pulling |  | 2027-04-28 → 2027-04-20 (-8d) |  | 106.35d → 113.68d |
| TAEXELCU260004 | Trench Backfilling |  | 2027-04-26 → 2027-04-17 (-9d) | 38% → 39% | 106.35d → 113.68d |
| TAEXELCU260006 | Poles RC Foundation | 2027-04-17 → 2027-04-07 (-10d) | 2027-04-24 → 2027-04-14 (-10d) |  | 83.85d → 91.05d |
| TAEXELCU260008 | Lighting Pole Installation with Luminares | 2027-04-24 → 2027-04-14 (-10d) | 2027-05-03 → 2027-04-24 (-9d) |  | 83.85d → 91.05d |
| TAEXELCU260007 | Earthing cables | 2027-09-29 → 2027-09-28 (-1d) | 2027-10-04 → 2027-10-03 (-1d) |  | -26.19d → -25.86d |
| 10 | **CCTV Works** | 2026-11-28 → 2026-12-05 (+7d) | 2027-06-13 → 2027-06-20 (+7d) |  |  |
| TAEXCCCU260001 | Pipe Installation with manhole | 2026-11-28 → 2026-12-05 (+7d) | 2026-12-09 → 2026-12-16 (+7d) |  | -21.55d → -27.55d |
| TAEXCCCU260002 | CCTV Swiches Lighting panels Installation | 2027-05-09 → 2027-05-16 (+7d) | 2027-05-23 → 2027-05-30 (+7d) |  | -21.55d → -27.55d |
| TAEXCCCU260003 | Cable laying and connected with Panels | 2027-05-23 → 2027-05-30 (+7d) | 2027-06-01 → 2027-06-08 (+7d) |  | 51.45d → 45.45d |
| TAEXCCCU260004 | Pole Installation with IP Outdoor CCTV POE Camera | 2027-06-01 → 2027-06-08 (+7d) | 2027-06-13 → 2027-06-20 (+7d) |  | 51.45d → 45.45d |
| 3 | **Local Road 10** |  | 2027-06-26 → 2027-06-28 (+2d) |  |  |
| 12 | **Road Works** |  | 2027-05-19 → 2027-05-22 (+3d) |  |  |
| TAEXRDCL100003 | Subgrade Works | 2026-12-21 → 2026-12-08 (-13d) | 2026-12-26 → 2026-12-13 (-13d) |  | 40.15d → 52.25d |
| TAEXRDCL100004 | ABC aggregate Base Course Works | 2027-01-31 → 2027-01-23 (-8d) | 2027-02-04 → 2027-01-26 (-9d) |  | 9.1d → 18.2d |
| TAEXRDCL100005 | MBC1 layer | 2027-02-04 → 2027-01-27 (-8d) | 2027-02-06 → 2027-01-27 (-10d) |  | 9.1d → 18.2d |
| TAEXRDCL100006 | BBC Base Course | 2027-02-06 → 2027-01-28 (-9d) | 2027-02-08 → 2027-01-30 (-9d) |  | 9.1d → 18.2d |
| TAEXRDCL100008 | Precast Concret Kerps | 2027-02-08 → 2027-01-31 (-8d) | 2027-02-24 → 2027-02-15 (-9d) |  | 9.1d → 18.2d |
| TAEXRDCL100007 | BWC Asphalt Wearing Course with RC | 2027-04-28 → 2027-05-01 (+3d) | 2027-04-29 → 2027-05-02 (+3d) |  | 53.16d → 51.39d |
| TAEXRDCL100009 | Precast Interlock Works | 2027-04-29 → 2027-05-02 (+3d) | 2027-05-15 → 2027-05-17 (+2d) |  | 53.16d → 51.39d |
| TAEXRDCL100010 | Stone Paving works | 2027-05-15 → 2027-05-17 (+2d) | 2027-05-17 → 2027-05-19 (+2d) |  | 53.16d → 51.39d |
| TAEXRDCL100011 | Road Marking | 2027-05-17 → 2027-05-19 (+2d) | 2027-05-18 → 2027-05-20 (+2d) |  | 53.16d → 51.39d |
| TAEXRDCL100012 | Traffic Sinage | 2027-05-18 → 2027-05-20 (+2d) | 2027-05-19 → 2027-05-22 (+3d) |  | 53.16d → 51.39d |
| 25 | **Electrical Works** |  | 2027-06-26 → 2027-06-16 (-10d) |  |  |
| TAEXELCL100001 | Trench Cut off | 2027-01-09 → 2027-01-13 (+4d) | 2027-01-23 → 2027-01-27 (+4d) |  | -28.68d → -28.35d |
| TAEXELCL100002 | Drawpit and PVC Pipes Installation | 2027-04-17 → 2027-04-07 (-10d) | 2027-04-28 → 2027-04-19 (-9d) |  | 40.85d → 48.05d |
| TAEXELCL100003 | Road Crossing Ducts | 2027-04-28 → 2027-04-19 (-9d) | 2027-05-01 → 2027-04-21 (-10d) |  | 40.85d → 48.05d |
| TAEXELCL100006 | Poles RC Foundation | 2027-04-28 → 2027-04-19 (-9d) | 2027-05-02 → 2027-04-22 (-10d) |  | 51.85d → 59.05d |
| TAEXELCL100004 | Trench Backfilling | 2027-05-01 → 2027-04-21 (-10d) | 2027-05-12 → 2027-05-03 (-9d) |  | 40.85d → 48.05d |
| TAEXELCL100008 | Lighting Pole Installation with Luminares | 2027-05-02 → 2027-04-22 (-10d) | 2027-05-06 → 2027-04-27 (-9d) |  | 80.85d → 88.05d |
| TAEXELCL100005 | Cables Pulling | 2027-05-12 → 2027-05-03 (-9d) | 2027-05-15 → 2027-05-05 (-10d) |  | 40.85d → 48.05d |
| TAEXELCL100007 | Earthing cables | 2027-06-23 → 2027-06-14 (-9d) | 2027-06-26 → 2027-06-16 (-10d) |  | 6.85d → 14.05d |
| 14 | **Telecommunication Works** | 2027-02-10 → 2027-01-25 (-16d) | 2027-06-01 → 2027-05-18 (-14d) |  |  |
| TAEXTCCL100001 | Trench Cut off | 2027-02-10 → 2027-01-25 (-16d) | 2027-02-16 → 2027-01-31 (-16d) |  | -23.61d → -9.61d |
| TAEXTCCL100002 | Drawpit and PVC Pipes Installation | 2027-05-13 → 2027-04-29 (-14d) | 2027-05-18 → 2027-05-04 (-14d) |  | -21.47d → -9.47d |
| TAEXTCCL100003 | Road Crossing Ducts | 2027-05-18 → 2027-05-04 (-14d) | 2027-05-20 → 2027-05-06 (-14d) |  | 58.85d → 70.05d |
| TAEXTCCL100004 | Trench Backfilling | 2027-05-20 → 2027-05-06 (-14d) | 2027-06-01 → 2027-05-18 (-14d) |  | 58.85d → 70.05d |
| 10 | **CCTV Works** | 2026-12-09 → 2026-12-16 (+7d) | 2027-06-21 → 2027-06-28 (+7d) |  |  |
| TAEXCCCL100001 | Pipe Installation with manhole | 2026-12-09 → 2026-12-16 (+7d) | 2026-12-19 → 2026-12-26 (+7d) |  | -21.55d → -27.55d |
| TAEXCCCL100002 | CCTV Swiches Lighting panels Installation | 2027-05-23 → 2027-05-30 (+7d) | 2027-06-03 → 2027-06-10 (+7d) |  | -21.55d → -27.55d |

| ID | Task | Start | Finish | Complete | Total float |
| --- | --- | --- | --- | --- | --- |
| TAEXCCCL100003 | Cable laying and connected with Panels | 2027-06-03 → 2027-06-10 (+7d) | 2027-06-10 → 2027-06-17 (+7d) |  | 44.45d → 38.45d |
| TAEXCCCL100004 | Pole Installation with IP Outdoor CCTV POE Camera | 2027-06-10 → 2027-06-17 (+7d) | 2027-06-21 → 2027-06-28 (+7d) |  | 44.45d → 38.45d |
| 1 | **Potable Networks** |  | 2026-11-15 → 2026-11-01 (-14d) |  |  |
| TAEXPTCL100004 | Backfilling Works for Trench |  | 2026-11-15 → 2026-11-01 A (-14d) | 95% → 100% | 200.56d → none |
| 4 | **Storm Networks** |  | 2027-01-31 → 2026-10-31 (-92d) |  |  |
| TAEXSTCL100006 | Install Catch Basin with UPVC Pipes & Fittings |  | 2027-01-31 → 2026-10-31 A (-92d) | 85% → 100% | 9.1d → none |
| NEWPROJ-16-1-9-4 | **AMANAH ROAD** |  | 2027-08-16 → 2027-07-21 (-26d) |  |  |
| TAEXRDCA050007 | Backfilling Works for Road | 2027-07-18 → 2027-06-22 (-26d) | 2027-08-16 → 2027-07-21 (-26d) |  | 16.13d → 38.19d |
| 10 | **ZONE 2** |  | 2027-09-05 → 2027-09-12 (+7d) |  |  |
| 1 | **Collector Road 01** |  | 2027-07-26 → 2027-08-02 (+7d) |  |  |
| 13 | **Road Works** |  | 2027-05-01 → 2027-05-04 (+3d) |  |  |
| TAEXRDCC0100011 | Road Excavation and Disposal Part 01 | 2027-01-12 → 2027-01-16 (+4d) | 2027-01-16 → 2027-01-19 (+3d) |  | 3.16d → 1.39d |
| TAEXRDCC0100021 | Backfilling Works for Road Part 01 | 2027-01-16 → 2027-01-19 (+3d) | 2027-01-19 → 2027-01-23 (+4d) |  | 3.16d → 1.39d |
| TAEXRDCC0100031 | Subgrade Works Part 01 | 2027-01-19 → 2027-01-23 (+4d) | 2027-02-03 → 2027-02-07 (+4d) |  | 3.16d → 1.39d |
| TAEXRDCC010004 | ABC aggregate Base Course Works | 2027-02-03 → 2027-02-07 (+4d) | 2027-02-24 → 2027-02-28 (+4d) |  | 3.16d → 1.39d |
| TAEXRDCC010005 | MBC1 layer | 2027-02-24 → 2027-02-28 (+4d) | 2027-02-27 → 2027-03-02 (+3d) |  | 3.16d → 1.39d |
| TAEXRDCC010006 | BBC Base Course | 2027-02-27 → 2027-03-02 (+3d) | 2027-03-03 → 2027-03-07 (+4d) |  | 3.16d → 1.39d |
| TAEXRDCC010008 | Precast Concret Kerps | 2027-03-03 → 2027-03-07 (+4d) | 2027-03-24 → 2027-03-28 (+4d) |  | 3.16d → 1.39d |
| TAEXRDCC010007 | BWC Asphalt Wearing Course with RC | 2027-03-24 → 2027-03-28 (+4d) | 2027-03-27 → 2027-03-30 (+3d) |  | 73.67d → 70.19d |
| TAEXRDCC010009 | Precast Interlock Works | 2027-03-27 → 2027-03-30 (+3d) | 2027-04-14 → 2027-04-18 (+4d) |  | 73.67d → 70.19d |
| TAEXRDCC010010 | Stone Paving works | 2027-04-14 → 2027-04-18 (+4d) | 2027-04-25 → 2027-04-28 (+3d) |  | 73.67d → 70.19d |
| TAEXRDCC010011 | Road Marking | 2027-04-25 → 2027-04-28 (+3d) | 2027-04-27 → 2027-05-01 (+4d) |  | 73.67d → 70.19d |
| TAEXRDCC010012 | Traffic Sinage | 2027-04-27 → 2027-05-01 (+4d) | 2027-05-01 → 2027-05-04 (+3d) |  | 73.67d → 70.19d |
| 11 | **Electrical Works** |  | 2027-06-28 → 2027-06-19 (-9d) |  |  |
| TAEXELCC010003 | Road Crossing Ducts |  | 2027-04-29 → 2027-04-21 (-8d) |  | 44.11d → 51.31d |
| TAEXELCC010001 | Trench Cut off | 2027-01-23 → 2027-01-27 (+4d) | 2027-02-07 → 2027-02-11 (+4d) |  | -28.68d → -28.35d |
| TAEXELCC010002 | Drawpit and PVC Pipes Installation | 2027-04-17 → 2027-04-07 (-10d) | 2027-04-28 → 2027-04-19 (-9d) |  | 44.11d → 51.31d |
| TAEXELCC010006 | Poles RC Foundation | 2027-04-28 → 2027-04-19 (-9d) | 2027-05-02 → 2027-04-22 (-10d) |  | 53.85d → 61.05d |
| TAEXELCC010004 | Trench Backfilling | 2027-04-29 → 2027-04-21 (-8d) | 2027-05-17 → 2027-05-09 (-8d) |  | 44.11d → 51.31d |
| TAEXELCC010005 | Cables Pulling | 2027-05-17 → 2027-05-09 (-8d) | 2027-05-22 → 2027-05-13 (-9d) |  | 44.11d → 51.31d |
| TAEXELCC010008 | Lighting Pole Installation with Luminares | 2027-05-22 → 2027-05-13 (-9d) | 2027-06-02 → 2027-05-25 (-8d) |  | 44.11d → 51.31d |
| TAEXELCC010007 | Earthing cables | 2027-06-26 → 2027-06-16 (-10d) | 2027-06-28 → 2027-06-19 (-9d) |  | 6.85d → 14.05d |
| 1 | **Telecommunication Works** |  | 2027-06-17 → 2027-06-05 (-12d) |  |  |
| TAEXTCCC010003 | Road Crossing Ducts |  | 2027-05-31 → 2027-05-18 (-13d) |  | 30.25d → 41.45d |
| TAEXTCCC010001 | Trench Cut off | 2027-02-16 → 2027-01-31 (-16d) | 2027-03-15 → 2027-02-27 (-16d) |  | -23.61d → -9.61d |
| TAEXTCCC010002 | Drawpit and HDPE Pipes Installation | 2027-05-18 → 2027-05-04 (-14d) | 2027-05-30 → 2027-05-16 (-14d) |  | -21.47d → -9.47d |
| TAEXTCCC010004 | Trench Backfilling | 2027-05-31 → 2027-05-18 (-13d) | 2027-06-17 → 2027-06-05 (-12d) |  | 30.25d → 41.45d |
| 2 | **CCTV Works** | 2026-12-19 → 2026-12-26 (+7d) | 2027-07-26 → 2027-08-02 (+7d) |  |  |
| TAEXCCCC010001 | Pipe Installation with manhole | 2026-12-19 → 2026-12-26 (+7d) | 2027-01-02 → 2027-01-09 (+7d) |  | -21.55d → -27.55d |
| TAEXCCCC010002 | CCTV Swiches Lighting panels Installation | 2027-06-03 → 2027-06-10 (+7d) | 2027-06-22 → 2027-06-29 (+7d) |  | -21.55d → -27.55d |
| TAEXCCCC010003 | Cable laying and connected with Panels | 2027-06-22 → 2027-06-29 (+7d) | 2027-07-06 → 2027-07-13 (+7d) |  | 14.45d → 8.45d |
| TAEXCCCC010004 | Pole Installation with IP Outdoor CCTV POE Camera | 2027-07-06 → 2027-07-13 (+7d) | 2027-07-26 → 2027-08-02 (+7d) |  | 14.45d → 8.45d |
| 3 | **Potable Networks** |  | 2027-03-29 → 2027-03-27 (-2d) |  |  |
| TAEXPTCC010002 | Bedding Works |  | 2026-11-14 → 2026-11-19 (+5d) |  | 3.16d → 1.39d |
| TAEXPTCC010003 | Install Pipes & Fittings |  | 2026-11-25 → 2026-12-02 (+7d) |  | 3.16d → 1.39d |
| TAEXPTCC010004 | Backfilling Works for Trench |  | 2026-12-08 → 2026-12-15 (+7d) |  | 5.48d → 1.39d |
| TAEXPTCC010007 | Valve Chamber works |  | 2027-03-24 → 2027-03-22 (-2d) |  | 106.56d → 108.58d |
| TAEXPTCC010005 | Install Valves with fittings |  | 2027-02-17 → 2027-02-20 (+3d) |  | 112.13d → 110.55d |
| TAEXPTCC0100011 | Excavation works for Trench Part 01 | 2026-10-31 → 2026-11-07 (+7d) | 2026-11-11 → 2026-11-18 (+7d) |  | 3.16d → 1.39d |
| TAEXPTCC010006 | Install fire hydrent | 2027-02-11 → 2027-02-13 (+2d) | 2027-02-20 → 2027-02-21 (+1d) |  | 78.06d → 80.08d |
| TAEXPTCC010008 | Inspection Test | 2027-03-24 → 2027-03-22 (-2d) | 2027-03-29 → 2027-03-27 (-2d) |  | 106.56d → 108.58d |
| 4 | **TSE Networks** |  | 2027-04-03 → 2027-03-31 (-3d) |  |  |
| TAEXTSCC010001 | Excavation works for Trench |  | 2026-11-21 → 2026-11-09 (-12d) |  | 5.04d → 26.35d |
| TAEXTSCC010005 | Install Valves with fittings |  | 2026-12-30 → 2027-01-03 (+4d) |  | 3.16d → 1.39d |
| TAEXTSCC010006 | Valve Chamber works |  | 2027-01-12 → 2027-01-16 (+4d) |  | 3.16d → 1.39d |
| TAEXTSCC010003 | Install Pipes & Fittings | 2026-11-25 → 2026-10-28 A (-28d) | 2026-12-12 → 2026-12-08 (-4d) | 0% → 60% | 3.16d → 7.47d |
| TAEXTSCC010002 | Bedding Works | 2026-11-21 → 2026-10-29 A (-23d) | 2026-11-23 → 2026-11-21 (-2d) | 0% → 60% | 5.04d → 16.89d |
| TAEXTSCC010004 | Backfilling Works for Trench | 2026-12-12 → 2026-12-15 (+3d) | 2026-12-30 → 2027-01-03 (+4d) |  | 3.16d → 1.39d |
| TAEXTSCC010007 | Inspection Test | 2027-03-29 → 2027-03-27 (-2d) | 2027-04-03 → 2027-03-31 (-3d) |  | 106.56d → 108.58d |
| 5 | **Sewerage Networks** |  | 2026-12-16 → 2026-12-15 (-1d) |  |  |
| TAEXSWCC0100011 | Excavation works for Trench Part 01 |  | 2026-11-03 → 2026-10-28 A (-6d) | 98% → 100% | 139.63d → none |
| TAEXSWCC010005 | Manhole Installation with backfilling |  | 2026-12-15 → 2026-12-14 (-1d) | 85% → 90% | 187.5d → 188.85d |
| TAEXSWCC0100021 | Bedding Works Part 01 |  | 2026-11-03 → 2026-11-01 A (-2d) | 95% → 100% | 192.6d → none |
| TAEXSWCC0100031 | Install GRP Pipes & Fittings Part 01 |  | 2026-11-03 → 2026-11-02 (-1d) |  | 192.6d → 196.4d |
| TAEXSWCC010006 | Leakage Test |  | 2026-12-16 → 2026-12-15 (-1d) |  | 187.5d → 188.85d |
| TAEXSWCC0100041 | Backfilling Works for Trench Part 01 |  | 2026-11-28 → 2026-11-23 (-5d) | 25% → 55% | 192.6d → 196.4d |
| 6 | **Storm Networks** |  | 2027-01-10 → 2026-12-19 (-22d) |  |  |
| TAEXSTCC0100051 | Manhole Installation with backfilling Part 01 |  | 2026-12-24 → 2026-11-24 (-30d) | 50% → 85% | 26.65d → 57.76d |
| TAEXSTCC0100091 | Install Box Culvert Part 2 Part 01 |  | 2026-12-26 → 2026-11-24 (-32d) |  | 26.65d → 57.76d |
| TAEXSTCC010006 | Install Catch Basin with UPVC Pipes & Fittings |  | 2027-01-06 → 2026-12-03 (-34d) | 10% → 35% | 26.65d → 57.76d |

| ID | Task | Start | Finish | Complete | Total float |
| --- | --- | --- | --- | --- | --- |
| TAEXSTCC0100041 | Backfilling Works for Trench & Box Culvert Part 01 | 2026-10-26 → 2026-11-02 (+7d) | 2026-11-03 → 2026-11-10 (+7d) |  | 70.19d → 68.9d |
| TAEXSTCC010007 | Leakage Test | 2027-01-06 → 2026-12-15 (-22d) | 2027-01-10 → 2026-12-19 (-22d) |  | 177.16d → 196.85d |
| 11 | **Upgrade Local 28** |  | 2027-08-03 → 2027-08-10 (+7d) |  |  |
| 24 | **Road Works** | 2027-03-24 → 2027-03-28 (+4d) | 2027-05-23 → 2027-05-26 (+3d) |  |  |
| TAEXRDCU280002 | Precast Concret Kerps | 2027-03-24 → 2027-03-28 (+4d) | 2027-04-11 → 2027-04-14 (+3d) |  | 3.16d → 1.39d |
| TAEXRDCU280001 | BWC Asphalt Wearing Course with RC | 2027-04-28 → 2027-05-02 (+4d) | 2027-04-29 → 2027-05-03 (+4d) |  | 54.67d → 51.19d |
| TAEXRDCU280003 | Precast Interlock Works | 2027-04-29 → 2027-05-03 (+4d) | 2027-05-15 → 2027-05-18 (+3d) |  | 54.67d → 51.19d |
| TAEXRDCU280004 | Stone Paving works | 2027-05-15 → 2027-05-18 (+3d) | 2027-05-19 → 2027-05-23 (+4d) |  | 54.67d → 51.19d |
| TAEXRDCU280005 | Road Marking | 2027-05-19 → 2027-05-23 (+4d) | 2027-05-20 → 2027-05-24 (+4d) |  | 54.67d → 51.19d |
| TAEXRDCU280006 | Traffic Sinage | 2027-05-20 → 2027-05-24 (+4d) | 2027-05-23 → 2027-05-26 (+3d) |  | 54.67d → 51.19d |
| 15 | **Electrical Works** | 2027-02-07 → 2026-10-28 (-102d) | 2027-07-03 → 2027-06-23 (-10d) |  |  |
| TAEXELCU280001 | Trench Cut off | 2027-02-07 → 2026-10-28 A (-102d) |  | 0% → 42% | -28.68d → -28.35d |
| TAEXELCU280005 | Cables Pulling | 2027-05-24 → 2026-10-29 A (-207d) | 2027-05-29 → 2027-05-18 (-11d) | 0% → 42% | 32.85d → 41.73d |
| TAEXELCU280002 | Drawpit and PVC Pipes Installation | 2027-04-17 → 2027-04-07 (-10d) | 2027-04-29 → 2027-04-20 (-9d) |  | 29.85d → 37.05d |
| TAEXELCU280003 | Road Crossing Ducts | 2027-04-29 → 2027-04-20 (-9d) | 2027-05-04 → 2027-04-25 (-9d) |  | 32.85d → 41.73d |
| TAEXELCU280004 | Trench Backfilling | 2027-05-04 → 2027-04-25 (-9d) | 2027-05-24 → 2027-05-15 (-9d) |  | 32.85d → 41.73d |
| TAEXELCU280006 | Poles RC Foundation | 2027-05-25 → 2027-05-16 (-9d) | 2027-06-01 → 2027-05-23 (-9d) |  | 29.85d → 37.05d |
| TAEXELCU280008 | Lighting Pole Installation with Luminares | 2027-06-01 → 2027-05-23 (-9d) | 2027-06-10 → 2027-06-01 (-9d) |  | 37.85d → 45.05d |
| TAEXELCU280007 | Earthing cables | 2027-06-28 → 2027-06-19 (-9d) | 2027-07-03 → 2027-06-23 (-10d) |  | 6.85d → 14.05d |
| 1 | **Telecommunication Works** | 2027-03-15 → 2027-02-27 (-16d) | 2027-06-28 → 2027-06-14 (-14d) |  |  |
| TAEXTCCU280001 | Trench Cut off | 2027-03-15 → 2027-02-27 (-16d) | 2027-03-27 → 2027-03-10 (-17d) |  | -23.61d → -9.61d |
| TAEXTCCU280002 | Drawpit and PVC Pipes Installation | 2027-05-30 → 2027-05-16 (-14d) | 2027-06-08 → 2027-05-25 (-14d) |  | -21.47d → -9.47d |
| TAEXTCCU280003 | Road Crossing Ducts | 2027-06-08 → 2027-05-25 (-14d) | 2027-06-13 → 2027-05-30 (-14d) |  | 21.85d → 33.05d |
| TAEXTCCU280004 | Trench Backfilling | 2027-06-13 → 2027-05-30 (-14d) | 2027-06-28 → 2027-06-14 (-14d) |  | 21.85d → 33.05d |
| 2 | **CCTV Works** | 2027-01-02 → 2027-01-09 (+7d) | 2027-08-03 → 2027-08-10 (+7d) |  |  |
| TAEXCCCU280001 | Pipe Installation with manhole | 2027-01-02 → 2027-01-09 (+7d) | 2027-01-16 → 2027-01-23 (+7d) |  | -21.55d → -27.55d |
| TAEXCCCU280002 | CCTV Swiches Lighting panels Installation | 2027-06-22 → 2027-06-29 (+7d) | 2027-07-08 → 2027-07-15 (+7d) |  | -21.55d → -27.55d |
| TAEXCCCU280003 | Cable laying and connected with Panels | 2027-07-08 → 2027-07-15 (+7d) | 2027-07-20 → 2027-07-27 (+7d) |  | 7.45d → 1.45d |
| TAEXCCCU280004 | Pole Installation with IP Outdoor CCTV POE Camera | 2027-07-20 → 2027-07-27 (+7d) | 2027-08-03 → 2027-08-10 (+7d) |  | 7.45d → 1.45d |
| 3 | **Potable Networks** |  | 2027-03-27 → 2027-03-20 (-7d) |  |  |
| TAEXPTCU280001 | Excavation works for Trench |  | 2026-11-16 → 2026-10-28 A (-19d) | 94% → 100% | 56.04d → none |
| TAEXPTCU280002 | Bedding Works |  | 2026-11-16 → 2026-10-28 A (-19d) | 94% → 100% | 180.79d → none |
| TAEXPTCU280003 | Install Pipes & Fittings |  | 2026-11-17 → 2026-10-29 A (-19d) | 94% → 100% | 180.79d → none |
| TAEXPTCU280004 | Backfilling Works for Trench | 2026-11-17 → 2026-10-28 A (-20d) | 2026-12-03 → 2026-10-30 A (-34d) | 0% → 100% | 180.79d → none |
| TAEXPTCU280005 | Install Valves with fittings | 2026-11-29 → 2026-10-28 A (-32d) | 2026-12-03 → 2026-10-29 A (-35d) | 0% → 100% | 180.79d → none |
| TAEXPTCU280006 | Install fire hydrent | 2026-12-03 → 2026-10-28 A (-36d) | 2026-12-10 → 2026-10-29 A (-42d) | 0% → 100% | 180.79d → none |
| TAEXPTCU280008 | Inspection Test | 2027-03-22 → 2026-10-28 A (-145d) | 2027-03-27 → 2026-10-29 A (-149d) | 0% → 100% | 108.41d → none |
| TAEXPTCU280007 | Valve Chamber works | 2027-03-04 → 2027-03-02 (-2d) | 2027-03-22 → 2027-03-20 (-2d) |  | 108.41d → 114.43d |
| 4 | **TSE Networks** |  | 2027-03-31 → 2027-03-24 (-7d) |  |  |
| TAEXTSCU280005 | Install Valves with fittings |  | 2027-01-20 → 2027-01-07 (-13d) |  | 152.02d → 162.9d |
| TAEXTSCU280006 | Valve Chamber works |  | 2027-02-03 → 2027-01-21 (-13d) |  | 152.02d → 162.9d |
| TAEXTSCU280001 | Excavation works for Trench | 2026-11-28 → 2026-11-15 (-13d) | 2026-12-23 → 2026-12-10 (-13d) |  | 45.42d → 56.3d |
| TAEXTSCU280002 | Bedding Works | 2026-12-23 → 2026-12-10 (-13d) | 2026-12-26 → 2026-12-13 (-13d) |  | 152.02d → 162.9d |
| TAEXTSCU280003 | Install Pipes & Fittings | 2026-12-26 → 2026-12-13 (-13d) | 2027-01-04 → 2026-12-22 (-13d) |  | 152.02d → 162.9d |
| TAEXTSCU280004 | Backfilling Works for Trench | 2027-01-04 → 2026-12-22 (-13d) | 2027-01-20 → 2027-01-07 (-13d) |  | 152.02d → 162.9d |
| TAEXTSCU280007 | Inspection Test | 2027-03-27 → 2027-03-20 (-7d) | 2027-03-31 → 2027-03-24 (-7d) |  | 108.41d → 114.43d |
| 19 | **Storm Networks** |  | 2027-03-31 → 2027-03-24 (-7d) |  |  |
| TAEXSTCU280007 | Leakage Test |  | 2027-03-31 → 2027-03-24 (-7d) |  | 108.41d → 114.43d |
| TAEXSTCU280006 | Install Catch Basin with UPVC Pipes & Fittings | 2026-12-19 → 2026-12-13 (-6d) | 2027-01-02 → 2026-12-26 (-7d) |  | 9.6d → 18.2d |
| 5 | **Local Road 02** |  | 2027-08-22 → 2027-08-29 (+7d) |  |  |
| 2 | **Road Works** |  | 2027-07-18 → 2027-06-22 (-26d) |  |  |
| TAEXRDC L020008 | Precast Concret Kerps |  | 2027-04-18 → 2027-04-20 (+2d) | 31% → 50% | 3.16d → 1.39d |
| TAEXRDC L020007 | BWC Asphalt Wearing Course with RC | 2027-05-23 → 2027-05-01 (-22d) | 2027-05-24 → 2027-05-02 (-22d) |  | 31.19d → 50.32d |
| TAEXRDC L020009 | Precast Interlock Works | 2027-05-24 → 2027-05-02 (-22d) | 2027-06-03 → 2027-05-12 (-22d) |  | 35.19d → 54.32d |
| TAEXRDC L020010 | Stone Paving works | 2027-06-03 → 2027-05-12 (-22d) | 2027-06-08 → 2027-05-17 (-22d) |  | 35.19d → 54.32d |
| TAEXRDC L020011 | Road Marking | 2027-07-12 → 2027-06-16 (-26d) | 2027-07-15 → 2027-06-20 (-25d) |  | 6.13d → 28.19d |
| TAEXRDC L020012 | Traffic Sinage | 2027-07-15 → 2027-06-20 (-25d) | 2027-07-18 → 2027-06-22 (-26d) |  | 6.13d → 28.19d |
| 1 | **Electrical Works** |  | 2027-07-05 → 2027-06-26 (-9d) |  |  |
| TAEXELCL020001 | Trench Cut off |  | 2027-02-25 → 2027-02-24 (-1d) |  | -28.68d → -28.35d |
| TAEXELCL020004 | Trench Backfilling |  | 2027-04-25 → 2027-04-14 (-11d) | 22% → 40% | 64.21d → 74.65d |
| TAEXELCL020005 | Cables Pulling |  | 2027-04-26 → 2026-10-26 A (-182d) | 46% → 100% | 64.21d → none |
| TAEXELCL020006 | Poles RC Foundation | 2027-04-17 → 2027-04-07 (-10d) | 2027-04-20 → 2027-04-11 (-9d) |  | 69.85d → 77.05d |
| TAEXELCL020008 | Lighting Pole Installation with Luminares | 2027-04-20 → 2027-04-11 (-9d) | 2027-04-25 → 2027-04-15 (-10d) |  | 77.85d → 85.05d |
| TAEXELCL020007 | Earthing cables | 2027-07-03 → 2027-06-23 (-10d) | 2027-07-05 → 2027-06-26 (-9d) |  | 6.85d → 14.05d |
| 5 | **Telecommunication Works** |  | 2027-06-19 → 2027-06-05 (-14d) |  |  |
| TAEXTCCL020001 | Trench Cut off |  | 2027-04-03 → 2027-03-17 (-17d) |  | -23.61d → -9.61d |
| TAEXTCCL020004 | Trench Backfilling | 2027-06-08 → 2027-05-25 (-14d) | 2027-06-19 → 2027-06-05 (-14d) |  | 29.85d → 41.05d |
| 3 | **CCTV Works** | 2027-01-16 → 2027-01-23 (+7d) | 2027-08-22 → 2027-08-29 (+7d) |  |  |
| TAEXCCCL020001 | Pipe Installation with manhole | 2027-01-16 → 2027-01-23 (+7d) | 2027-01-27 → 2027-02-03 (+7d) |  | -21.55d → -27.55d |
| TAEXCCCL020002 | CCTV Swiches Lighting panels Installation | 2027-07-08 → 2027-07-15 (+7d) | 2027-07-24 → 2027-07-31 (+7d) |  | -21.55d → -27.55d |

| ID | Task | Start | Finish | Complete | Total float |
| --- | --- | --- | --- | --- | --- |
| TAEXCCCL020003 | Cable laying and connected with Panels | 2027-07-24 → 2027-07-31 (+7d) | 2027-08-04 → 2027-08-11 (+7d) |  | -8.55d → -14.55d |
| TAEXCCCL020004 | Pole Installation with IP Outdoor CCTV POE Camera | 2027-08-04 → 2027-08-11 (+7d) | 2027-08-22 → 2027-08-29 (+7d) |  | -8.55d → -14.55d |
| 7 | **Local Road 03** |  | 2027-09-04 → 2027-09-11 (+7d) |  |  |
| 2 | **Road Works** |  | 2027-05-09 → 2027-05-11 (+2d) |  |  |
| TAEXRDCL0300021 | Backfilling Works for Road Part 01 |  | 2026-12-21 → 2026-11-24 (-27d) |  | 40.15d → 64.76d |
| TAEXRDCL030008 | Precast Concret Kerps |  | 2027-04-21 → 2027-04-24 (+3d) |  | 3.16d → 1.39d |
| TAEXRDCL030007 | BWC Asphalt Wearing Course with RC | 2027-04-21 → 2027-04-24 (+3d) | 2027-04-22 → 2027-04-25 (+3d) |  | 66.76d → 64.99d |
| TAEXRDCL030009 | Precast Interlock Works | 2027-04-22 → 2027-04-25 (+3d) | 2027-05-02 → 2027-05-04 (+2d) |  | 66.76d → 64.99d |
| TAEXRDCL030010 | Stone Paving works | 2027-05-02 → 2027-05-04 (+2d) | 2027-05-05 → 2027-05-08 (+3d) |  | 66.76d → 64.99d |
| TAEXRDCL030011 | Road Marking | 2027-05-05 → 2027-05-08 (+3d) | 2027-05-06 → 2027-05-09 (+3d) |  | 66.76d → 64.99d |
| TAEXRDCL030012 | Traffic Sinage | 2027-05-06 → 2027-05-09 (+3d) | 2027-05-09 → 2027-05-11 (+2d) |  | 66.76d → 64.99d |
| 1 | **Electrical Works** |  | 2027-07-07 → 2027-06-28 (-9d) |  |  |
| TAEXELCL030002 | Drawpit and PVC Pipes Installation |  | 2027-04-19 → 2027-04-10 (-9d) |  | 65.2d → 72.4d |
| TAEXELCL030003 | Road Crossing Ducts |  | 2027-04-19 → 2027-04-11 (-8d) |  | 65.2d → 72.4d |
| TAEXELCL030005 | Cables Pulling |  | 2027-04-27 → 2027-04-19 (-8d) |  | 65.2d → 72.4d |
| TAEXELCL030004 | Trench Backfilling |  | 2027-04-25 → 2027-04-17 (-8d) |  | 65.2d → 72.4d |
| TAEXELCL030006 | Poles RC Foundation | 2027-04-19 → 2027-04-10 (-9d) | 2027-04-22 → 2027-04-13 (-9d) |  | 69.85d → 77.05d |
| TAEXELCL030008 | Lighting Pole Installation with Luminares | 2027-04-22 → 2027-04-13 (-9d) | 2027-04-28 → 2027-04-19 (-9d) |  | 74.85d → 82.05d |
| TAEXELCL030007 | Earthing cables | 2027-07-05 → 2027-06-26 (-9d) | 2027-07-07 → 2027-06-28 (-9d) |  | 6.85d → 14.05d |
| 3 | **Telecommunication Works** |  | 2027-06-22 → 2027-06-08 (-14d) |  |  |
| TAEXTCCL030002 | Drawpit and PVC Pipes Installation |  | 2027-06-09 → 2027-05-27 (-13d) |  | -21.47d → -9.47d |
| TAEXTCCL030003 | Road Crossing Ducts |  | 2027-06-10 → 2027-05-27 (-14d) |  | 26.87d → 38.07d |
| TAEXTCCL030001 | Trench Cut off | 2027-04-03 → 2027-03-17 (-17d) | 2027-04-11 → 2027-03-25 (-17d) |  | -23.61d → -9.61d |
| TAEXTCCL030004 | Trench Backfilling | 2027-06-10 → 2027-05-27 (-14d) | 2027-06-22 → 2027-06-08 (-14d) |  | 26.87d → 38.07d |
| 4 | **CCTV Works** | 2027-01-27 → 2027-02-03 (+7d) | 2027-09-04 → 2027-09-11 (+7d) |  |  |
| TAEXCCCL030001 | Pipe Installation with manhole | 2027-01-27 → 2027-02-03 (+7d) | 2027-02-09 → 2027-02-16 (+7d) |  | -21.55d → -27.55d |
| TAEXCCCL030002 | CCTV Swiches Lighting panels Installation | 2027-07-24 → 2027-07-31 (+7d) | 2027-08-08 → 2027-08-15 (+7d) |  | -21.55d → -27.55d |
| TAEXCCCL030003 | Cable laying and connected with Panels | 2027-08-08 → 2027-08-15 (+7d) | 2027-08-19 → 2027-08-26 (+7d) |  | -20.55d → -26.55d |
| TAEXCCCL030004 | Pole Installation with IP Outdoor CCTV POE Camera | 2027-08-19 → 2027-08-26 (+7d) | 2027-09-04 → 2027-09-11 (+7d) |  | -20.55d → -26.55d |
| 9 | **Local Road 04** |  | 2027-09-01 → 2027-09-07 (+6d) |  |  |
| 2 | **Road Works** |  | 2027-06-09 → 2027-06-12 (+3d) |  |  |
| TAEXRDCL040007 | BWC Asphalt Wearing Course with RC | 2027-04-21 → 2027-04-24 (+3d) | 2027-05-15 → 2027-05-17 (+2d) |  | 39.76d → 37.99d |
| TAEXRDCL040009 | Precast Interlock Works | 2027-05-15 → 2027-05-17 (+2d) | 2027-05-29 → 2027-05-31 (+2d) |  | 39.76d → 37.99d |
| TAEXRDCL040010 | Stone Paving works | 2027-05-29 → 2027-05-31 (+2d) | 2027-06-06 → 2027-06-08 (+2d) |  | 39.76d → 37.99d |
| TAEXRDCL040011 | Road Marking | 2027-06-06 → 2027-06-08 (+2d) | 2027-06-07 → 2027-06-09 (+2d) |  | 39.76d → 37.99d |
| TAEXRDCL040012 | Traffic Sinage | 2027-06-07 → 2027-06-09 (+2d) | 2027-06-09 → 2027-06-12 (+3d) |  | 39.76d → 37.99d |
| 1 | **Electrical Works** |  | 2027-07-10 → 2027-06-30 (-10d) |  |  |
| TAEXELCL040002 | Drawpit and PVC Pipes Installation |  | 2027-04-19 → 2026-10-27 A (-174d) | 67% → 100% | 60.55d → none |
| TAEXELCL040003 | Road Crossing Ducts |  | 2027-04-20 → 2026-10-27 A (-175d) | 67% → 100% | 60.55d → none |
| TAEXELCL040006 | Poles RC Foundation |  | 2027-04-22 → 2027-04-10 (-12d) | 18% → 50% | 71.75d → 82.55d |
| TAEXELCL040004 | Trench Backfilling | 2027-04-20 → 2027-04-07 (-13d) | 2027-05-02 → 2027-04-19 (-13d) |  | 60.55d → 71.05d |
| TAEXELCL040008 | Lighting Pole Installation with Luminares | 2027-04-22 → 2027-04-10 (-12d) | 2027-04-28 → 2027-04-15 (-13d) |  | 74.75d → 85.55d |
| TAEXELCL040005 | Cables Pulling | 2027-05-02 → 2027-04-19 (-13d) | 2027-05-05 → 2027-04-22 (-13d) |  | 60.55d → 71.05d |
| TAEXELCL040009 | Install Substation & RMU | 2027-05-05 → 2027-04-22 (-13d) | 2027-05-16 → 2027-05-03 (-13d) |  | 73.55d → 84.05d |
| TAEXELCL040007 | Earthing cables | 2027-07-07 → 2027-06-28 (-9d) | 2027-07-10 → 2027-06-30 (-10d) |  | 6.85d → 14.05d |
| 3 | **Telecommunication Works** |  | 2027-06-21 → 2027-06-08 (-13d) |  |  |
| TAEXTCCL040001 | Trench Cut off |  | 2027-04-18 → 2027-04-01 (-17d) |  | -23.61d → -9.61d |
| TAEXTCCL040004 | Trench Backfilling | 2027-06-09 → 2027-05-27 (-13d) | 2027-06-21 → 2027-06-08 (-13d) |  | 27.53d → 38.73d |
| 4 | **CCTV Works** | 2027-02-09 → 2027-02-16 (+7d) | 2027-09-01 → 2027-09-07 (+6d) |  |  |
| TAEXCCCL040001 | Pipe Installation with manhole | 2027-02-09 → 2027-02-16 (+7d) | 2027-02-21 → 2027-02-28 (+7d) |  | -21.55d → -27.55d |
| TAEXCCCL040002 | CCTV Swiches Lighting panels Installation | 2027-07-24 → 2027-07-31 (+7d) | 2027-08-04 → 2027-08-11 (+7d) |  | -21.55d → -27.55d |
| TAEXCCCL040003 | Cable laying and connected with Panels | 2027-08-04 → 2027-08-11 (+7d) | 2027-08-16 → 2027-08-23 (+7d) |  | -17.55d → -23.55d |
| TAEXCCCL040004 | Pole Installation with IP Outdoor CCTV POE Camera | 2027-08-16 → 2027-08-23 (+7d) | 2027-09-01 → 2027-09-07 (+6d) |  | -17.55d → -23.55d |
| 2 | **Local Road 05** |  | 2027-09-05 → 2027-09-12 (+7d) |  |  |
| 3 | **Road Works** |  | 2027-06-19 → 2027-05-27 (-23d) |  |  |
| TAEXRDCL050008 | Precast Concret Kerps |  | 2026-12-19 → 2026-12-09 (-10d) |  | 138.29d → 147.65d |
| TAEXRDCL050007 | BWC Asphalt Wearing Course with RC | 2027-05-24 → 2027-05-02 (-22d) | 2027-05-25 → 2027-05-03 (-22d) |  | 31.19d → 50.32d |
| TAEXRDCL050009 | Precast Interlock Works | 2027-05-25 → 2027-05-03 (-22d) | 2027-06-12 → 2027-05-20 (-23d) |  | 31.19d → 50.32d |
| TAEXRDCL050010 | Stone Paving works | 2027-06-12 → 2027-05-20 (-23d) | 2027-06-15 → 2027-05-24 (-22d) |  | 31.19d → 50.32d |
| TAEXRDCL050011 | Road Marking | 2027-06-15 → 2027-05-24 (-22d) | 2027-06-16 → 2027-05-25 (-22d) |  | 31.19d → 50.32d |
| TAEXRDCL050012 | Traffic Sinage | 2027-06-16 → 2027-05-25 (-22d) | 2027-06-19 → 2027-05-27 (-23d) |  | 31.19d → 50.32d |
| 1 | **Electrical Works** |  | 2027-07-12 → 2027-07-03 (-9d) |  |  |
| TAEXELCL050004 | Trench Backfilling | 2027-04-17 → 2027-04-07 (-10d) | 2027-04-28 → 2027-04-19 (-9d) |  | 65.85d → 73.05d |
| TAEXELCL050006 | Poles RC Foundation | 2027-04-17 → 2027-04-07 (-10d) | 2027-04-20 → 2027-04-11 (-9d) |  | 46.85d → 54.05d |
| TAEXELCL050008 | Lighting Pole Installation with Luminares | 2027-04-20 → 2027-04-11 (-9d) | 2027-04-26 → 2027-04-17 (-9d) |  | 46.85d → 54.05d |
| TAEXELCL050005 | Cables Pulling | 2027-04-28 → 2027-04-19 (-9d) | 2027-05-02 → 2027-04-22 (-10d) |  | 65.85d → 73.05d |
| TAEXELCL050007 | Earthing cables | 2027-07-10 → 2027-06-30 (-10d) | 2027-07-12 → 2027-07-03 (-9d) |  | 6.85d → 14.05d |
| 2 | **Telecommunication Works** |  | 2027-06-21 → 2027-06-08 (-13d) |  |  |
| TAEXTCCL050001 | Trench Cut off |  | 2027-04-26 → 2027-04-10 (-16d) |  | -23.61d → -9.61d |
| TAEXTCCL050004 | Trench Backfilling | 2027-06-09 → 2027-05-27 (-13d) | 2027-06-21 → 2027-06-08 (-13d) |  | 20.53d → 31.73d |

| ID | Task | Start | Finish | Complete | Total float |
| --- | --- | --- | --- | --- | --- |
| 4 | **CCTV Works** | 2027-02-21 → 2027-02-28 (+7d) | 2027-09-05 → 2027-09-12 (+7d) |  |  |
| TAEXCCCL050001 | Pipe Installation with manhole | 2027-02-21 → 2027-02-28 (+7d) | 2027-03-04 → 2027-03-11 (+7d) |  | -21.55d → -27.55d |
| TAEXCCCL050002 | CCTV Swiches Lighting panels Installation | 2027-08-04 → 2027-08-11 (+7d) | 2027-08-16 → 2027-08-23 (+7d) |  | -21.55d → -27.55d |
| TAEXCCCL050003 | Cable laying and connected with Panels | 2027-08-16 → 2027-08-23 (+7d) | 2027-08-28 → 2027-09-03 (+6d) |  | -21.55d → -27.55d |
| TAEXCCCL050004 | Pole Installation with IP Outdoor CCTV POE Camera | 2027-08-28 → 2027-09-03 (+6d) | 2027-09-05 → 2027-09-12 (+7d) |  | -21.55d → -27.55d |
| 11 | **ZONE 3** |  | 2027-09-29 → 2027-09-28 (-1d) |  |  |
| 1 | **Local Road 01** |  | 2027-08-05 → 2027-08-03 (-2d) |  |  |
| 12 | **Road Works** |  | 2027-06-14 → 2027-06-16 (+2d) |  |  |
| TAEXRDCL010004 | ABC aggregate Base Course Works |  | 2027-02-25 → 2027-01-28 (-28d) |  | 48.79d → 73.64d |
| TAEXRDCL010005 | MBC1 layer |  | 2027-02-27 → 2027-01-28 (-30d) |  | 48.79d → 73.64d |
| TAEXRDCL010006 | BBC Base Course |  | 2027-02-27 → 2027-01-28 (-30d) |  | 48.79d → 73.64d |
| TAEXRDCL010008 | Precast Concret Kerps |  | 2027-04-27 → 2027-04-29 (+2d) |  | 3.16d → 1.39d |
| TAEXRDCL010007 | BWC Asphalt Wearing Course with RC | 2027-04-27 → 2027-04-29 (+2d) | 2027-04-28 → 2027-05-01 (+3d) |  | 42.16d → 40.39d |
| TAEXRDCL010009 | Precast Interlock Works | 2027-05-19 → 2027-05-22 (+3d) | 2027-06-06 → 2027-06-08 (+2d) |  | 42.16d → 40.39d |
| TAEXRDCL010010 | Stone Paving works | 2027-06-06 → 2027-06-08 (+2d) | 2027-06-10 → 2027-06-13 (+3d) |  | 42.16d → 40.39d |
| TAEXRDCL010011 | Road Marking | 2027-06-10 → 2027-06-13 (+3d) | 2027-06-12 → 2027-06-14 (+2d) |  | 42.16d → 40.39d |
| TAEXRDCL010012 | Traffic Sinage | 2027-06-12 → 2027-06-14 (+2d) | 2027-06-14 → 2027-06-16 (+2d) |  | 42.16d → 40.39d |
| 1 | **Electrical Works** |  | 2027-08-05 → 2027-08-03 (-2d) |  |  |
| TAEXELCL010002 | Road Crossing Ducts |  | 2027-05-27 → 2027-05-25 (-2d) | 29% → 43% | -12.05d → -10.04d |
| TAEXELCL010003 | Drawpit and PVC Pipes Installation |  | 2027-05-24 → 2027-05-22 (-2d) | 29% → 43% | -12.05d → -10.04d |
| TAEXELCL010006 | Poles RC Foundation | 2027-05-24 → 2027-05-22 (-2d) | 2027-05-27 → 2027-05-25 (-2d) |  | 45.79d → 47.24d |
| TAEXELCL010004 | Trench Backfilling | 2027-05-27 → 2027-05-25 (-2d) | 2027-06-08 → 2027-06-06 (-2d) |  | -12.05d → -10.04d |
| TAEXELCL010008 | Lighting Pole Installation with Luminares | 2027-05-27 → 2027-05-25 (-2d) | 2027-06-02 → 2027-05-31 (-2d) |  | 51.79d → 53.24d |
| TAEXELCL010005 | Cables Pulling | 2027-07-31 → 2027-07-28 (-3d) | 2027-08-03 → 2027-08-01 (-2d) |  | -12.05d → -10.04d |
| TAEXELCL010007 | Earthing cables | 2027-08-03 → 2027-08-01 (-2d) | 2027-08-05 → 2027-08-03 (-2d) |  | -12.05d → -10.04d |
| 2 | **Telecommunication Works** | 2027-05-19 → 2026-10-31 (-200d) | 2027-06-28 → 2027-06-14 (-14d) |  |  |
| TAEXTCCL010002 | Drawpit and PVC Pipes Installation | 2027-06-09 → 2026-10-31 A (-221d) | 2027-06-14 → 2027-05-31 (-14d) | 0% → 20% | -21.47d → -9.47d |
| TAEXTCCL010003 | Road Crossing Ducts | 2027-06-14 → 2026-10-31 A (-226d) | 2027-06-16 → 2027-06-02 (-14d) | 0% → 20% | 28.53d → 40.93d |
| TAEXTCCL010001 | Trench Cut off | 2027-05-19 → 2027-05-03 (-16d) | 2027-05-27 → 2027-05-11 (-16d) |  | -23.61d → -9.61d |
| TAEXTCCL010004 | Trench Backfilling | 2027-06-16 → 2027-06-02 (-14d) | 2027-06-28 → 2027-06-14 (-14d) |  | 28.53d → 40.93d |
| 16 | **CCTV Works** | 2027-05-01 → 2027-05-08 (+7d) | 2027-06-28 → 2027-07-05 (+7d) |  |  |
| TAEXCCCL010001 | Pipe Installation with manhole | 2027-05-01 → 2027-05-08 (+7d) | 2027-05-15 → 2027-05-22 (+7d) |  | -20.55d → -26.55d |
| TAEXCCCL010002 | CCTV Swiches Lighting panels Installation | 2027-05-15 → 2027-05-22 (+7d) | 2027-05-30 → 2027-06-06 (+7d) |  | 38.45d → 32.45d |
| TAEXCCCL010003 | Cable laying and connected with Panels | 2027-05-30 → 2027-06-06 (+7d) | 2027-06-10 → 2027-06-17 (+7d) |  | 38.45d → 32.45d |
| TAEXCCCL010004 | Pole Installation with IP Outdoor CCTV POE Camera | 2027-06-10 → 2027-06-17 (+7d) | 2027-06-28 → 2027-07-05 (+7d) |  | 38.45d → 32.45d |
| 17 | **Potable Networks** |  | 2027-03-28 → 2027-03-30 (+2d) |  |  |
| TAEXPTCL010002 | Bedding Works |  | 2026-10-31 → 2026-11-07 (+7d) | 85% → 90% | 71.92d → 70.73d |
| TAEXPTCL010003 | Install Pipes & Fittings |  | 2027-01-24 → 2027-01-26 (+2d) | 85% → 90% | 78.06d → 80.08d |
| TAEXPTCL010004 | Backfilling Works for Trench |  | 2027-01-26 → 2027-01-28 (+2d) |  | 117.04d → 115.06d |
| TAEXPTCL0100011 | Excavation works for Trench Part 01 |  | 2026-10-26 → 2026-11-02 (+7d) | 85% → 90% | 3.16d → 1.39d |
| TAEXPTCL010007 | Valve Chamber works |  | 2027-03-24 → 2027-03-27 (+3d) |  | 56.04d → 53.66d |
| TAEXPTCL010005 | Install Valves with fittings |  | 2027-01-28 → 2027-01-31 (+3d) |  | 117.04d → 115.06d |
| TAEXPTCL010006 | Install fire hydrent |  | 2027-01-24 → 2027-01-26 (+2d) |  | 83.04d → 84.66d |
| TAEXPTCL010008 | Inspection Test |  | 2027-03-28 → 2027-03-30 (+2d) |  | 111.44d → 109.06d |
| 3 | **TSE Networks** |  | 2027-05-13 → 2027-05-01 (-12d) |  |  |
| TAEXTSCL010002 | Bedding Works |  | 2026-10-31 → 2026-11-07 (+7d) |  | 71.92d → 70.73d |
| TAEXTSCL010003 | Install Pipes & Fittings |  | 2027-05-04 → 2027-04-21 (-13d) |  | 49.54d → 60.42d |
| TAEXTSCL010004 | Backfilling Works for Trench |  | 2027-05-10 → 2027-04-27 (-13d) |  | 49.54d → 60.42d |
| TAEXTSCL0100011 | Excavation works for Trench Part 01 |  | 2026-10-29 → 2026-11-05 (+7d) |  | 5.04d → 26.35d |
| TAEXTSCL010006 | Valve Chamber works |  | 2027-05-11 → 2027-04-28 (-13d) |  | 81.95d → 92.83d |
| TAEXTSCL010005 | Install Valves with fittings |  | 2027-05-10 → 2027-04-27 (-13d) |  | 49.54d → 60.42d |
| TAEXTSCL010007 | Inspection Test |  | 2027-05-13 → 2027-05-01 (-12d) |  | 81.95d → 92.83d |
| 13 | **Sewerage Networks** |  | 2026-12-28 → 2026-12-27 (-1d) |  |  |
| TAEXSWCL0100011 | Excavation works for Trench Part 01 |  | 2026-11-14 → 2026-11-12 (-2d) |  | 139.63d → 141.38d |
| TAEXSWCL0100021 | Bedding Works Part 01 |  | 2026-11-16 → 2026-11-15 (-1d) |  | 183d → 184.6d |
| TAEXSWCL0100031 | Install GRP Pipes & Fittings Part 01 |  | 2026-11-28 → 2026-11-25 (-3d) |  | 183d → 184.6d |
| TAEXSWCL0100051 | Manhole Installation with backfilling Part 01 |  | 2026-12-27 → 2026-12-24 (-3d) |  | 183d → 184.6d |
| TAEXSWCL0100041 | Backfilling Works for Trench Part 01 |  | 2026-12-15 → 2026-12-13 (-2d) |  | 183d → 184.6d |
| TAEXSWCL010006 | Leakage Test |  | 2026-12-28 → 2026-12-27 (-1d) | 40% → 50% | 183d → 184.6d |
| 4 | **Storm Networks** |  | 2027-01-04 → 2026-12-06 (-29d) |  |  |
| TAEXSTCL0100051 | Manhole Installation with backfilling Part 01 |  | 2026-12-20 → 2026-11-23 (-27d) |  | 48.79d → 73.64d |
| TAEXSTCL0100011 | Excavation works for Trench & Box Culvert Part 01 |  | 2026-10-29 → 2026-11-05 (+7d) |  | 22.43d → 24.04d |
| TAEXSTCL010006 | Install Catch Basin with UPVC Pipes & Fittings |  | 2026-12-26 → 2026-11-29 (-27d) |  | 48.79d → 73.64d |
| TAEXSTCL0100041 | Backfilling Works for Trench and Boxculvert Part 01 |  | 2026-11-01 → 2026-11-08 (+7d) |  | 89.33d → 85.28d |
| TAEXSTCL0100021 | Bedding Works Part 01 |  | 2026-11-01 → 2026-11-08 (+7d) |  | 71.92d → 70.73d |
| TAEXSTCL0100031 | Install GRP Pipes & Fittings Part 01 |  | 2026-11-02 → 2026-11-09 (+7d) |  | 71.92d → 70.73d |
| TAEXSTCL010007 | Leakage Test | 2026-12-31 → 2026-10-31 A (-61d) | 2027-01-04 → 2026-12-06 (-29d) | 0% → 65% | 48.79d → 73.64d |
| 12 | **Road Works** |  | 2027-06-23 → 2027-06-26 (+3d) |  |  |
| TAEXRDCL0600031 | Subgrade Works Part 01 | 2027-03-01 → 2027-02-10 (-19d) | 2027-03-06 → 2027-02-15 (-19d) |  | 33.61d → 49.4d |
| TAEXRDCL060004 | ABC aggregate Base Course Works | 2027-03-06 → 2027-02-15 (-19d) | 2027-03-15 → 2027-02-24 (-19d) |  | 33.61d → 49.4d |

| ID | Task | Start | Finish | Complete | Total float |
| --- | --- | --- | --- | --- | --- |
| TAEXRDCL060005 | MBC1 layer | 2027-03-15 → 2027-02-24 (-19d) | 2027-03-16 → 2027-02-25 (-19d) |  | 33.61d → 49.4d |
| TAEXRDCL060006 | BBC Base Course | 2027-03-16 → 2027-02-25 (-19d) | 2027-03-23 → 2027-03-04 (-19d) |  | 33.61d → 49.4d |
| TAEXRDCL060008 | Precast Concret Kerps | 2027-04-27 → 2027-04-29 (+2d) | 2027-05-18 → 2027-05-20 (+2d) |  | 3.16d → 1.39d |
| TAEXRDCL060007 | BWC Asphalt Wearing Course with RC | 2027-05-18 → 2027-05-20 (+2d) | 2027-05-20 → 2027-05-23 (+3d) |  | 34.16d → 32.39d |
| TAEXRDCL060009 | Precast Interlock Works | 2027-05-20 → 2027-05-23 (+3d) | 2027-06-06 → 2027-06-08 (+2d) |  | 34.16d → 32.39d |
| TAEXRDCL060010 | Stone Paving works | 2027-06-06 → 2027-06-08 (+2d) | 2027-06-20 → 2027-06-22 (+2d) |  | 34.16d → 32.39d |
| TAEXRDCL060011 | Road Marking | 2027-06-20 → 2027-06-22 (+2d) | 2027-06-21 → 2027-06-23 (+2d) |  | 34.16d → 32.39d |
| TAEXRDCL060012 | Traffic Sinage | 2027-06-21 → 2027-06-23 (+2d) | 2027-06-23 → 2027-06-26 (+3d) |  | 34.16d → 32.39d |
| 2 | **Telecommunication Works** | 2027-05-27 → 2027-05-11 (-16d) | 2027-07-08 → 2027-06-24 (-14d) |  |  |
| TAEXTCCL060001 | Trench Cut off | 2027-05-27 → 2027-05-11 (-16d) | 2027-06-08 → 2027-05-23 (-16d) |  | -23.61d → -9.61d |
| TAEXTCCL060002 | Drawpit and PVC Pipes Installation | 2027-06-14 → 2027-05-31 (-14d) | 2027-06-20 → 2027-06-06 (-14d) |  | -21.47d → -9.47d |
| TAEXTCCL060003 | Road Crossing Ducts | 2027-06-20 → 2027-06-06 (-14d) | 2027-06-22 → 2027-06-08 (-14d) |  | 19.53d → 31.53d |
| TAEXTCCL060004 | Trench Backfilling | 2027-06-22 → 2027-06-08 (-14d) | 2027-07-08 → 2027-06-24 (-14d) |  | 19.53d → 31.53d |
| 17 | **CCTV Works** | 2027-05-15 → 2027-05-22 (+7d) | 2027-07-12 → 2027-07-19 (+7d) |  |  |
| TAEXCCCL060001 | Pipe Installation with manhole | 2027-05-15 → 2027-05-22 (+7d) | 2027-05-29 → 2027-06-05 (+7d) |  | -20.55d → -26.55d |
| TAEXCCCL060002 | CCTV Swiches Lighting panels Installation | 2027-05-29 → 2027-06-05 (+7d) | 2027-06-13 → 2027-06-20 (+7d) |  | 26.45d → 20.45d |
| TAEXCCCL060003 | Cable laying and connected with Panels | 2027-06-13 → 2027-06-20 (+7d) | 2027-06-24 → 2027-07-01 (+7d) |  | 26.45d → 20.45d |
| TAEXCCCL060004 | Pole Installation with IP Outdoor CCTV POE Camera | 2027-06-24 → 2027-07-01 (+7d) | 2027-07-12 → 2027-07-19 (+7d) |  | 26.45d → 20.45d |
| 16 | **Potable Networks** |  | 2027-04-13 → 2027-04-15 (+2d) |  |  |
| TAEXPTCL060001 | Excavation works for Trench |  | 2026-11-11 → 2026-11-18 (+7d) |  | 56.04d → 53.66d |
| TAEXPTCL060003 | Install Pipes & Fittings |  | 2027-01-24 → 2027-01-26 (+2d) | 90% → 95% | 78.06d → 80.08d |
| TAEXPTCL060002 | Bedding Works |  | 2026-11-24 → 2026-11-18 (-6d) | 90% → 95% | 74.2d → 88.88d |
| TAEXPTCL060007 | Valve Chamber works |  | 2027-04-08 → 2027-04-11 (+3d) |  | 56.04d → 53.66d |
| TAEXPTCL060004 | Backfilling Works for Trench |  | 2027-01-26 → 2027-01-27 (+1d) | 90% → 95% | 134.64d → 133.81d |
| TAEXPTCL060005 | Install Valves with fittings |  | 2027-02-21 → 2027-02-23 (+2d) |  | 112.13d → 110.55d |
| TAEXPTCL060006 | Install fire hydrent | 2027-02-20 → 2026-11-01 A (-111d) | 2027-02-27 → 2027-02-24 (-3d) | 0% → 60% | 78.06d → 80.08d |
| TAEXPTCL060008 | Inspection Test | 2027-04-08 → 2027-04-11 (+3d) | 2027-04-13 → 2027-04-15 (+2d) |  | 97.84d → 95.46d |
| 3 | **TSE Networks** |  | 2027-06-01 → 2027-05-19 (-13d) |  |  |
| TAEXTSCL060001 | Excavation works for Trench |  | 2026-11-23 → 2026-11-10 (-13d) | 69% → 80% | 45.42d → 56.3d |
| TAEXTSCL060003 | Install Pipes & Fittings |  | 2027-05-08 → 2027-04-25 (-13d) |  | 50.66d → 61.54d |
| TAEXTSCL060002 | Bedding Works |  | 2026-11-24 → 2026-11-11 (-13d) |  | 74.2d → 94.9d |
| TAEXTSCL060004 | Backfilling Works for Trench |  | 2027-05-12 → 2027-04-29 (-13d) |  | 50.66d → 61.54d |
| TAEXTSCL060007 | Inspection Test |  | 2027-06-01 → 2027-05-19 (-13d) |  | 62.55d → 73.43d |
| TAEXTSCL060006 | Valve Chamber works |  | 2027-05-31 → 2027-05-18 (-13d) |  | 62.55d → 73.43d |
| TAEXTSCL060005 | Install Valves with fittings |  | 2027-05-13 → 2027-05-01 (-12d) |  | 49.54d → 60.42d |
| 14 | **Sewerage Networks** |  | 2027-03-03 → 2027-02-13 (-18d) |  |  |
| TAEXSWCL060006 | Leakage Test |  | 2027-03-03 → 2027-02-13 (-18d) | 25% → 45% | 127.36d → 143.75d |
| TAEXSWCL0600021 | Bedding Works Part 01 |  | 2026-11-04 → 2026-10-28 A (-7d) | 50% → 100% | 209.95d → none |
| TAEXSWCL0600031 | Install GRP Pipes & Fittings Part 01 |  | 2026-11-07 → 2026-11-03 (-4d) | 50% → 75% | 209.95d → 214.1d |
| TAEXSWCL0600051 | Manhole Installation with backfilling Part 01 |  | 2026-12-19 → 2026-12-17 (-2d) | 45% → 55% | 189.15d → 191.3d |
| TAEXSWCL0600041 | Backfilling Works for Trench Part 01 | 2026-11-12 → 2026-11-09 (-3d) | 2026-11-24 → 2026-11-21 (-3d) |  | 209.95d → 214.1d |
| 4 | **Storm Networks** |  | 2027-03-01 → 2027-02-10 (-19d) |  |  |
| TAEXSTCL060001 | Excavation works for Trench |  | 2026-11-01 → 2026-11-08 (+7d) |  | 22.43d → 24.04d |
| TAEXSTCL060002 | Bedding Works |  | 2026-11-25 → 2026-11-18 (-7d) | 80% → 94% | 74.2d → 88.88d |
| TAEXSTCL060003 | Install GRP Pipes & Fittings |  | 2026-11-26 → 2026-11-19 (-7d) | 85% → 94% | 74.2d → 88.88d |
| TAEXSTCL060005 | Manhole Installation with backfilling |  | 2026-12-26 → 2026-12-19 (-7d) | 75% → 85% | 74.2d → 88.88d |
| TAEXSTCL060004 | Backfilling Works for Trench |  | 2026-12-14 → 2026-12-07 (-7d) | 30% → 90% | 74.2d → 88.88d |
| TAEXSTCL060007 | Leakage Test | 2027-02-25 → 2026-10-28 A (-120d) | 2027-03-01 → 2027-02-10 (-19d) | 0% → 60% | 33.61d → 49.4d |
| TAEXSTCL060006 | Install Catch Basin with UPVC Pipes & Fittings | 2027-02-11 → 2026-10-31 A (-103d) | 2027-02-25 → 2027-02-09 (-16d) | 0% → 55% | 33.61d → 49.4d |
| 12 | **Road Works** |  | 2027-07-28 → 2027-07-31 (+3d) |  |  |
| TAEXRDCL070004 | ABC aggregate Base Course Works | 2027-03-31 → 2027-03-23 (-8d) | 2027-04-04 → 2027-03-27 (-8d) |  | 32.05d → 43.14d |
| TAEXRDCL070005 | MBC1 layer | 2027-04-04 → 2027-03-27 (-8d) | 2027-04-05 → 2027-03-28 (-8d) |  | 32.05d → 43.14d |
| TAEXRDCL070006 | BBC Base Course | 2027-04-05 → 2027-03-28 (-8d) | 2027-04-07 → 2027-03-30 (-8d) |  | 32.05d → 43.14d |
| TAEXRDCL070008 | Precast Concret Kerps | 2027-05-18 → 2027-05-20 (+2d) | 2027-06-08 → 2027-06-10 (+2d) |  | 3.16d → 1.39d |
| TAEXRDCL070007 | BWC Asphalt Wearing Course with RC | 2027-06-08 → 2027-06-10 (+2d) | 2027-06-09 → 2027-06-12 (+3d) |  | 4.16d → 2.39d |
| TAEXRDCL070009 | Precast Interlock Works | 2027-06-19 → 2027-06-21 (+2d) | 2027-07-07 → 2027-07-10 (+3d) |  | 4.16d → 2.39d |
| TAEXRDCL070010 | Stone Paving works | 2027-07-07 → 2027-07-10 (+3d) | 2027-07-25 → 2027-07-27 (+2d) |  | 4.16d → 2.39d |
| TAEXRDCL070011 | Road Marking | 2027-07-25 → 2027-07-27 (+2d) | 2027-07-26 → 2027-07-28 (+2d) |  | 4.16d → 2.39d |
| TAEXRDCL070012 | Traffic Sinage | 2027-07-26 → 2027-07-28 (+2d) | 2027-07-28 → 2027-07-31 (+3d) |  | 4.16d → 2.39d |
| 2 | **Telecommunication Works** | 2027-06-08 → 2027-05-23 (-16d) | 2027-07-08 → 2027-06-24 (-14d) |  |  |
| TAEXTCCL070001 | Trench Cut off | 2027-06-08 → 2027-05-23 (-16d) | 2027-06-15 → 2027-05-30 (-16d) |  | -23.61d → -9.61d |
| TAEXTCCL070002 | Drawpit and PVC Pipes Installation | 2027-06-20 → 2027-06-06 (-14d) | 2027-06-24 → 2027-06-10 (-14d) |  | -21.47d → -9.47d |
| TAEXTCCL070003 | Road Crossing Ducts | 2027-06-24 → 2027-06-10 (-14d) | 2027-06-27 → 2027-06-13 (-14d) |  | 19.53d → 31.53d |
| TAEXTCCL070004 | Trench Backfilling | 2027-06-27 → 2027-06-13 (-14d) | 2027-07-08 → 2027-06-24 (-14d) |  | 19.53d → 31.53d |
| 18 | **CCTV Works** | 2027-05-29 → 2027-06-05 (+7d) | 2027-07-19 → 2027-07-26 (+7d) |  |  |
| TAEXCCCL070001 | Pipe Installation with manhole | 2027-05-29 → 2027-06-05 (+7d) | 2027-06-08 → 2027-06-15 (+7d) |  | -20.55d → -26.55d |
| TAEXCCCL070002 | CCTV Swiches Lighting panels Installation | 2027-06-08 → 2027-06-15 (+7d) | 2027-06-22 → 2027-06-29 (+7d) |  | 20.45d → 14.45d |
| TAEXCCCL070003 | Cable laying and connected with Panels | 2027-06-22 → 2027-06-29 (+7d) | 2027-07-04 → 2027-07-11 (+7d) |  | 20.45d → 14.45d |
| TAEXCCCL070004 | Pole Installation with IP Outdoor CCTV POE Camera | 2027-07-04 → 2027-07-11 (+7d) | 2027-07-19 → 2027-07-26 (+7d) |  | 20.45d → 14.45d |
| 3 | **Potable Networks** |  | 2027-04-29 → 2027-05-02 (+3d) |  |  |

| ID | Task | Start | Finish | Complete | Total float |
| --- | --- | --- | --- | --- | --- |
| TAEXPTCL070002 | Bedding Works |  | 2026-11-01 → 2026-11-08 (+7d) |  | 150.2d → 148d |
| TAEXPTCL070003 | Install Pipes & Fittings |  | 2027-01-30 → 2027-01-31 (+1d) |  | 78.06d → 80.08d |
| TAEXPTCL070004 | Backfilling Works for Trench |  | 2027-02-07 → 2027-02-09 (+2d) |  | 112.13d → 110.55d |
| TAEXPTCL070005 | Install Valves with fittings |  | 2027-02-07 → 2027-02-09 (+2d) |  | 112.13d → 110.55d |
| TAEXPTCL0700011 | Excavation works for Trench Part 01 | 2026-10-26 → 2026-11-02 (+7d) | 2026-10-31 → 2026-11-07 (+7d) |  | 3.16d → 1.39d |
| TAEXPTCL070006 | Install fire hydrent | 2027-01-30 → 2027-01-31 (+1d) | 2027-02-04 → 2027-02-06 (+2d) |  | 78.06d → 80.08d |
| TAEXPTCL070007 | Valve Chamber works | 2027-04-08 → 2027-04-11 (+3d) | 2027-04-25 → 2027-04-27 (+2d) |  | 56.04d → 53.66d |
| TAEXPTCL070008 | Inspection Test | 2027-04-25 → 2027-04-27 (+2d) | 2027-04-29 → 2027-05-02 (+3d) |  | 83.84d → 81.46d |
| 4 | **TSE Networks** |  | 2027-06-08 → 2027-05-26 (-13d) |  |  |
| TAEXTSCL070005 | Install Valves with fittings |  | 2027-05-19 → 2027-05-06 (-13d) |  | 49.54d → 60.42d |
| TAEXTSCL070006 | Valve Chamber works |  | 2027-06-03 → 2027-05-22 (-12d) |  | 49.54d → 60.42d |
| TAEXTSCL0700011 | Excavation works for Trench Part 01 | 2026-10-29 A | 2026-11-03 → 2026-10-31 A (-3d) | 0% → 100% | 5.04d → none |
| TAEXTSCL0700021 | Bedding Works Part 01 | 2026-11-03 → 2026-10-31 A (-3d) | 2026-11-04 → 2026-10-31 A (-4d) | 0% → 100% | 166.95d → none |
| TAEXTSCL0700031 | Install Pipes & Fittings Part 01 | 2026-11-04 → 2026-11-01 A (-3d) | 2026-11-10 → 2026-11-01 A (-9d) | 0% → 100% | 166.95d → none |
| TAEXTSCL0700041 | Backfilling Works for Trench Part 01 | 2026-11-10 → 2026-11-08 (-2d) | 2026-11-19 → 2026-11-17 (-2d) |  | 172.87d → 174.95d |
| TAEXTSCL070007 | Inspection Test | 2027-06-03 → 2027-05-22 (-12d) | 2027-06-08 → 2027-05-26 (-13d) |  | 49.54d → 60.42d |
| 15 | **Sewerage Networks** |  | 2026-12-16 → 2026-10-31 (-46d) |  |  |
| TAEXSWCL070006 | Leakage Test | 2026-12-13 → 2026-10-27 A (-47d) | 2026-12-16 → 2026-10-31 A (-46d) | 0% → 100% | 193.35d → none |
| 5 | **Storm Networks** |  | 2027-02-13 → 2027-02-04 (-9d) |  |  |
| TAEXSTCL070007 | Leakage Test |  | 2027-02-13 → 2027-02-04 (-9d) |  | 32.05d → 43.14d |
| TAEXSTCL0700011 | Excavation works for Trench Part 01 | 2026-11-01 → 2026-10-29 A (-3d) | 2026-11-05 → 2026-10-31 A (-5d) | 0% → 100% | 22.43d → none |
| TAEXSTCL0700021 | Bedding Works Part 01 | 2026-11-05 → 2026-11-01 A (-4d) | 2026-11-07 → 2026-11-01 A (-6d) | 0% → 100% | 75.43d → none |
| TAEXSTCL0700031 | Install GRP Pipes & Fittings Part 01 | 2026-11-07 → 2026-11-08 (+1d) | 2026-11-12 → 2026-11-14 (+2d) |  | 75.43d → 78.13d |
| TAEXSTCL0700041 | Backfilling Works for Trench Part 01 | 2026-11-21 → 2026-11-22 (+1d) | 2026-11-30 → 2026-12-01 (+1d) |  | 75.43d → 78.13d |
| TAEXSTCL0700051 | Manhole Installation with backfilling Part 01 | 2026-12-19 → 2026-12-07 (-12d) | 2026-12-24 → 2026-12-13 (-11d) |  | 63.9d → 78.13d |
| TAEXSTCL070006 | Install Catch Basin with UPVC Pipes & Fittings | 2027-01-31 → 2027-01-23 (-8d) | 2027-02-11 → 2027-02-02 (-9d) |  | 32.05d → 43.14d |
| 12 | **Road Works** |  | 2027-07-27 → 2027-07-29 (+2d) |  |  |
| TAEXRDCL0800011 | Road Excavation and Disposal Part 01 | 2027-03-01 → 2027-02-10 (-19d) | 2027-03-07 → 2027-02-16 (-19d) |  | 39.55d → 59.04d |
| TAEXRDCL0800021 | Backfilling Works for Road Part 01 | 2027-03-07 → 2027-02-16 (-19d) | 2027-03-15 → 2027-02-24 (-19d) |  | 39.55d → 59.04d |
| TAEXRDCL0800031 | Subgrade Works Part 01 | 2027-03-15 → 2027-02-24 (-19d) | 2027-03-20 → 2027-03-01 (-19d) |  | 39.55d → 59.04d |
| TAEXRDCL080004 | ABC aggregate Base Course Works | 2027-03-20 → 2027-03-01 (-19d) | 2027-03-24 → 2027-03-06 (-18d) |  | 39.55d → 59.04d |
| TAEXRDCL080005 | MBC1 layer | 2027-03-24 → 2027-03-06 (-18d) | 2027-03-25 → 2027-03-07 (-18d) |  | 39.55d → 59.04d |
| TAEXRDCL080006 | BBC Base Course | 2027-03-25 → 2027-03-07 (-18d) | 2027-03-30 → 2027-03-11 (-19d) |  | 39.55d → 59.04d |
| TAEXRDCL080008 | Precast Concret Kerps | 2027-06-08 → 2027-06-10 (+2d) | 2027-06-24 → 2027-06-27 (+3d) |  | 3.16d → 1.39d |
| TAEXRDCL080007 | BWC Asphalt Wearing Course with RC | 2027-06-24 → 2027-06-27 (+3d) | 2027-06-26 → 2027-06-28 (+2d) |  | 5.16d → 3.39d |
| TAEXRDCL080009 | Precast Interlock Works | 2027-06-26 → 2027-06-28 (+2d) | 2027-07-15 → 2027-07-18 (+3d) |  | 5.16d → 3.39d |
| TAEXRDCL080010 | Stone Paving works | 2027-07-15 → 2027-07-18 (+3d) | 2027-07-24 → 2027-07-26 (+2d) |  | 5.16d → 3.39d |
| TAEXRDCL080011 | Road Marking | 2027-07-24 → 2027-07-26 (+2d) | 2027-07-25 → 2027-07-27 (+2d) |  | 5.16d → 3.39d |
| TAEXRDCL080012 | Traffic Sinage | 2027-07-25 → 2027-07-27 (+2d) | 2027-07-27 → 2027-07-29 (+2d) |  | 5.16d → 3.39d |
| 2 | **Telecommunication Works** | 2027-06-15 → 2027-05-30 (-16d) | 2027-07-21 → 2027-07-05 (-16d) |  |  |
| TAEXTCCL080001 | Trench Cut off | 2027-06-15 → 2027-05-30 (-16d) | 2027-06-27 → 2027-06-10 (-17d) |  | -23.61d → -9.61d |
| TAEXTCCL080002 | Drawpit and PVC Pipes Installation | 2027-06-27 → 2027-06-10 (-17d) | 2027-07-03 → 2027-06-16 (-17d) |  | -23.61d → -9.61d |
| TAEXTCCL080003 | Road Crossing Ducts | 2027-07-03 → 2027-06-16 (-17d) | 2027-07-05 → 2027-06-19 (-16d) |  | 8.39d → 22.39d |
| TAEXTCCL080004 | Trench Backfilling | 2027-07-05 → 2027-06-19 (-16d) | 2027-07-21 → 2027-07-05 (-16d) |  | 8.39d → 22.39d |
| 19 | **CCTV Works** | 2027-06-08 → 2027-06-15 (+7d) | 2027-08-01 → 2027-08-08 (+7d) |  |  |
| TAEXCCCL080001 | Pipe Installation with manhole | 2027-06-08 → 2027-06-15 (+7d) | 2027-06-17 → 2027-06-24 (+7d) |  | -20.55d → -26.55d |
| TAEXCCCL080002 | CCTV Swiches Lighting panels Installation | 2027-06-17 → 2027-06-24 (+7d) | 2027-07-03 → 2027-07-10 (+7d) |  | 9.45d → 3.45d |
| TAEXCCCL080003 | Cable laying and connected with Panels | 2027-07-03 → 2027-07-10 (+7d) | 2027-07-14 → 2027-07-21 (+7d) |  | 9.45d → 3.45d |
| TAEXCCCL080004 | Pole Installation with IP Outdoor CCTV POE Camera | 2027-07-14 → 2027-07-21 (+7d) | 2027-08-01 → 2027-08-08 (+7d) |  | 9.45d → 3.45d |
| 3 | **Potable Networks** |  | 2027-05-13 → 2027-05-17 (+4d) |  |  |
| TAEXPTCL080001 | Excavation works for Trench |  | 2026-11-14 → 2026-11-21 (+7d) |  | 56.04d → 53.66d |
| TAEXPTCL080003 | Install Pipes & Fittings |  | 2027-02-01 → 2027-02-02 (+1d) | 70% → 75% | 118.26d → 117.08d |
| TAEXPTCL080002 | Bedding Works |  | 2026-11-15 → 2026-11-22 (+7d) |  | 162.41d → 162.61d |
| TAEXPTCL080006 | Install fire hydrent |  | 2027-03-04 → 2027-03-02 (-2d) |  | 99.76d → 101.78d |
| TAEXPTCL080007 | Valve Chamber works |  | 2027-05-09 → 2027-05-12 (+3d) |  | 56.04d → 53.66d |
| TAEXPTCL080004 | Backfilling Works for Trench | 2027-02-01 → 2027-02-02 (+1d) | 2027-02-18 → 2027-02-20 (+2d) |  | 118.26d → 117.08d |
| TAEXPTCL080005 | Install Valves with fittings | 2027-02-21 → 2027-02-23 (+2d) | 2027-02-25 → 2027-02-28 (+3d) |  | 112.13d → 110.55d |
| TAEXPTCL080008 | Inspection Test | 2027-05-09 → 2027-05-12 (+3d) | 2027-05-13 → 2027-05-17 (+4d) |  | 67.04d → 64.66d |
| 4 | **TSE Networks** |  | 2027-05-18 → 2027-05-22 (+4d) |  |  |
| TAEXTSCL080001 | Excavation works for Trench |  | 2026-11-28 → 2026-11-15 (-13d) |  | 45.42d → 56.3d |
| TAEXTSCL080005 | Install Valves with fittings |  | 2026-12-20 → 2026-12-14 (-6d) |  | 178.32d → 183.26d |
| TAEXTSCL080006 | Valve Chamber works |  | 2027-01-04 → 2026-12-29 (-6d) |  | 178.32d → 183.26d |
| TAEXTSCL080002 | Bedding Works |  | 2026-11-28 → 2026-11-22 (-6d) |  | 151.67d → 162.61d |
| TAEXTSCL080003 | Install Pipes & Fittings |  | 2026-12-02 → 2026-11-26 (-6d) |  | 151.67d → 162.61d |
| TAEXTSCL080004 | Backfilling Works for Trench | 2026-12-02 → 2026-11-26 (-6d) | 2026-12-20 → 2026-12-14 (-6d) |  | 178.32d → 183.26d |
| TAEXTSCL080007 | Inspection Test | 2027-05-13 → 2027-05-17 (+4d) | 2027-05-18 → 2027-05-22 (+4d) |  | 67.04d → 64.66d |
| 16 | **Sewerage Networks** |  | 2026-12-15 → 2026-12-14 (-1d) |  |  |
| TAEXSWCL080006 | Leakage Test |  | 2026-12-15 → 2026-12-14 (-1d) | 80% → 90% | 194.75d → 195.7d |
| TAEXSWCL0800051 | Manhole Installation with backfilling Part 01 |  | 2026-12-14 → 2026-12-13 (-1d) |  | 194.75d → 195.7d |
| 5 | **Storm Networks** |  | 2027-02-01 → 2027-01-18 (-14d) |  |  |

| ID | Task | Start | Finish | Complete | Total float |
| --- | --- | --- | --- | --- | --- |
| TAEXSTCL0800051 | Manhole Installation with backfilling Part 01 |  | 2026-12-21 → 2026-12-07 (-14d) |  | 9.1d → 24.04d |
| TAEXSTCL080007 | Leakage Test |  | 2027-02-01 → 2027-01-18 (-14d) | 70% → 80% | 79d → 94.88d |
| TAEXSTCL0800031 | Install GRP Pipes & Fittings Part 01 |  | 2026-11-05 → 2026-11-08 (+3d) |  | 22.43d → 24.04d |
| TAEXSTCL0800041 | Backfilling Works for Trench Part 01 |  | 2026-11-23 → 2026-11-25 (+2d) |  | 22.43d → 24.04d |
| TAEXSTCL080006 | Install Catch Basin with UPVC Pipes & Fittings | 2026-12-21 → 2026-10-31 A (-51d) | 2027-01-03 → 2026-12-20 (-14d) | 0% → 5% | 9.1d → 24.04d |
| 12 | **Road Works** |  | 2027-07-29 → 2027-08-01 (+3d) |  |  |
| TAEXRDCL090004 | ABC aggregate Base Course Works | 2027-03-07 → 2027-02-28 (-7d) | 2027-03-13 → 2027-03-06 (-7d) |  | 51.45d → 61.19d |
| TAEXRDCL090005 | MBC1 layer | 2027-03-13 → 2027-03-06 (-7d) | 2027-03-14 → 2027-03-07 (-7d) |  | 51.45d → 61.19d |
| TAEXRDCL090006 | BBC Base Course | 2027-03-14 → 2027-03-07 (-7d) | 2027-03-16 → 2027-03-09 (-7d) |  | 51.45d → 61.19d |
| TAEXRDCL090008 | Precast Concret Kerps | 2027-06-24 → 2027-06-27 (+3d) | 2027-07-10 → 2027-07-12 (+2d) |  | 3.16d → 1.39d |
| TAEXRDCL090007 | BWC Asphalt Wearing Course with RC | 2027-07-10 → 2027-07-12 (+2d) | 2027-07-11 → 2027-07-13 (+2d) |  | 3.16d → 1.39d |
| TAEXRDCL090009 | Precast Interlock Works | 2027-07-11 → 2027-07-13 (+2d) | 2027-07-25 → 2027-07-27 (+2d) |  | 3.16d → 1.39d |
| TAEXRDCL090010 | Stone Paving works | 2027-07-25 → 2027-07-27 (+2d) | 2027-07-27 → 2027-07-29 (+2d) |  | 3.16d → 1.39d |
| TAEXRDCL090011 | Road Marking | 2027-07-27 → 2027-07-29 (+2d) | 2027-07-28 → 2027-07-31 (+3d) |  | 3.16d → 1.39d |
| TAEXRDCL090012 | Traffic Sinage | 2027-07-28 → 2027-07-31 (+3d) | 2027-07-29 → 2027-08-01 (+3d) |  | 3.16d → 1.39d |
| 2 | **Telecommunication Works** | 2027-06-27 → 2027-06-10 (-17d) | 2027-07-21 → 2027-07-05 (-16d) |  |  |
| TAEXTCCL090001 | Trench Cut off | 2027-06-27 → 2027-06-10 (-17d) | 2027-07-03 → 2027-06-16 (-17d) |  | -23.61d → -9.61d |
| TAEXTCCL090002 | Drawpit and PVC Pipes Installation | 2027-07-03 → 2027-06-16 (-17d) | 2027-07-07 → 2027-06-21 (-16d) |  | -23.61d → -9.61d |
| TAEXTCCL090003 | Road Crossing Ducts | 2027-07-07 → 2027-06-21 (-16d) | 2027-07-10 → 2027-06-23 (-17d) |  | 8.39d → 22.39d |
| TAEXTCCL090004 | Trench Backfilling | 2027-07-10 → 2027-06-23 (-17d) | 2027-07-21 → 2027-07-05 (-16d) |  | 8.39d → 22.39d |
| 20 | **CCTV Works** | 2027-06-17 → 2027-06-24 (+7d) | 2027-07-31 → 2027-08-07 (+7d) |  |  |
| TAEXCCCL090001 | Pipe Installation with manhole | 2027-06-17 → 2027-06-24 (+7d) | 2027-06-26 → 2027-07-03 (+7d) |  | -20.55d → -26.55d |
| TAEXCCCL090002 | CCTV Swiches Lighting panels Installation | 2027-06-26 → 2027-07-03 (+7d) | 2027-07-07 → 2027-07-14 (+7d) |  | 10.45d → 4.45d |
| TAEXCCCL090003 | Cable laying and connected with Panels | 2027-07-07 → 2027-07-14 (+7d) | 2027-07-17 → 2027-07-24 (+7d) |  | 10.45d → 4.45d |
| TAEXCCCL090004 | Pole Installation with IP Outdoor CCTV POE Camera | 2027-07-17 → 2027-07-24 (+7d) | 2027-07-31 → 2027-08-07 (+7d) |  | 10.45d → 4.45d |
| 3 | **Potable Networks** |  | 2027-05-29 → 2027-06-01 (+3d) |  |  |
| TAEXPTCL090005 | Install Valves with fittings |  | 2027-02-09 → 2027-02-11 (+2d) |  | 112.13d → 110.55d |
| TAEXPTCL090006 | Install fire hydrent | 2027-02-04 → 2027-02-06 (+2d) | 2027-02-11 → 2027-02-13 (+2d) |  | 78.06d → 80.08d |
| TAEXPTCL090007 | Valve Chamber works | 2027-05-09 → 2027-05-12 (+3d) | 2027-05-25 → 2027-05-29 (+4d) |  | 56.04d → 53.66d |
| TAEXPTCL090008 | Inspection Test | 2027-05-25 → 2027-05-29 (+4d) | 2027-05-29 → 2027-06-01 (+3d) |  | 58.04d → 55.66d |
| 4 | **TSE Networks** |  | 2027-06-05 → 2027-05-19 (-17d) |  |  |
| TAEXTSCL090005 | Install Valves with fittings |  | 2027-05-16 → 2027-05-03 (-13d) |  | 49.54d → 60.42d |
| TAEXTSCL0900011 | Excavation works for Trench Part 01 | 2026-11-03 → 2026-10-29 A (-5d) | 2026-11-17 → 2026-10-29 A (-19d) | 0% → 100% | 5.04d → none |
| TAEXTSCL090003 | Install Pipes & Fittings | 2026-12-02 → 2026-10-31 A (-32d) | 2026-12-09 → 2026-10-31 A (-39d) | 0% → 100% | 151.67d → none |
| TAEXTSCL090007 | Inspection Test | 2027-06-01 → 2026-10-31 A (-213d) | 2027-06-05 → 2026-10-31 A (-217d) | 0% → 100% | 52.69d → none |
| TAEXTSCL090002 | Bedding Works | 2026-11-17 → 2026-10-31 A (-17d) | 2026-11-19 → 2026-10-31 A (-19d) | 0% → 100% | 45.94d → none |
| TAEXTSCL090004 | Backfilling Works for Trench | 2026-12-09 → 2026-11-26 (-13d) | 2026-12-23 → 2026-12-10 (-13d) |  | 151.67d → 162.61d |
| TAEXTSCL090006 | Valve Chamber works | 2027-05-16 → 2027-05-03 (-13d) | 2027-06-01 → 2027-05-19 (-13d) |  | 52.69d → 66.57d |
| 17 | **Sewerage Networks** |  | 2026-10-29 → 2026-10-30 (+1d) |  |  |
| TAEXSWCL0900041 | Backfilling Works for Trench Part 01 |  | 2026-10-29 → 2026-10-30 A (+1d) | 60% → 100% | 234.8d → none |
| 5 | **Storm Networks** |  | 2027-01-13 → 2027-01-06 (-7d) |  |  |
| TAEXSTCL090005 | Manhole Installation with backfilling |  | 2026-12-20 → 2026-10-30 A (-51d) | 95% → 100% | 21d → none |
| TAEXSTCL090007 | Leakage Test |  | 2027-01-13 → 2027-01-06 (-7d) |  | 51.45d → 61.19d |
| TAEXSTCL090006 | Install Catch Basin with UPVC Pipes & Fittings | 2027-01-03 → 2026-12-27 (-7d) | 2027-01-13 → 2027-01-05 (-8d) |  | 9.1d → 18.2d |
| 23 | **CCTV Works** | 2027-07-04 → 2027-07-11 (+7d) | 2027-08-16 → 2027-08-23 (+7d) |  |  |
| TAEXCCCU060001 | Pipe Installation with manhole | 2027-07-04 → 2027-07-11 (+7d) | 2027-07-13 → 2027-07-20 (+7d) |  | -15.55d → -21.55d |
| TAEXCCCU060002 | CCTV Swiches Lighting panels Installation | 2027-07-13 → 2027-07-20 (+7d) | 2027-07-25 → 2027-08-01 (+7d) |  | -3.55d → -9.55d |
| TAEXCCCU060003 | Cable laying and connected with Panels | 2027-07-25 → 2027-08-01 (+7d) | 2027-08-04 → 2027-08-11 (+7d) |  | -3.55d → -9.55d |
| TAEXCCCU060004 | Pole Installation with IP Outdoor CCTV POE Camera | 2027-08-04 → 2027-08-11 (+7d) | 2027-08-16 → 2027-08-23 (+7d) |  | -3.55d → -9.55d |
| 7 | **Upgrade Local 07** |  | 2027-09-04 → 2027-09-03 (-1d) |  |  |
| 23 | **Electrical Works** |  | 2027-09-04 → 2027-09-03 (-1d) |  |  |
| TAEXELCU070003 | Road Crossing Ducts |  | 2027-08-21 → 2027-08-19 (-2d) |  | -26.19d → -25.86d |
| TAEXELCU070004 | Trench Backfilling | 2027-08-21 → 2027-08-19 (-2d) | 2027-08-30 → 2027-08-29 (-1d) |  | -26.19d → -25.86d |
| TAEXELCU070005 | Cables Pulling | 2027-08-30 → 2027-08-29 (-1d) | 2027-09-02 → 2027-09-01 (-1d) |  | -26.19d → -25.86d |
| TAEXELCU070007 | Earthing cables | 2027-09-02 → 2027-09-01 (-1d) | 2027-09-04 → 2027-09-03 (-1d) |  | -26.19d → -25.86d |
| 24 | **CCTV Works** | 2027-07-13 → 2027-07-20 (+7d) | 2027-08-25 → 2027-09-01 (+7d) |  |  |
| TAEXCCCU070001 | Pipe Installation with manhole | 2027-07-13 → 2027-07-20 (+7d) | 2027-07-22 → 2027-07-29 (+7d) |  | -15.55d → -21.55d |
| TAEXCCCU070002 | CCTV Swiches Lighting panels Installation | 2027-07-22 → 2027-07-29 (+7d) | 2027-08-03 → 2027-08-10 (+7d) |  | -11.55d → -17.55d |
| TAEXCCCU070003 | Cable laying and connected with Panels | 2027-08-03 → 2027-08-10 (+7d) | 2027-08-14 → 2027-08-21 (+7d) |  | -11.55d → -17.55d |
| TAEXCCCU070004 | Pole Installation with IP Outdoor CCTV POE Camera | 2027-08-14 → 2027-08-21 (+7d) | 2027-08-25 → 2027-09-01 (+7d) |  | -11.55d → -17.55d |
| 8 | **Upgrade Local 08** |  | 2027-09-06 → 2027-09-05 (-1d) |  |  |
| 24 | **Electrical Works** |  | 2027-09-06 → 2027-09-05 (-1d) |  |  |
| TAEXELCU080007 | Earthing cables | 2027-09-04 → 2027-09-03 (-1d) | 2027-09-06 → 2027-09-05 (-1d) |  | -26.19d → -25.86d |
| 25 | **CCTV Works** | 2027-07-13 → 2027-07-20 (+7d) | 2027-08-25 → 2027-09-01 (+7d) |  |  |
| TAEXCCCU080001 | Pipe Installation with manhole | 2027-07-13 → 2027-07-20 (+7d) | 2027-07-22 → 2027-07-29 (+7d) |  | -15.55d → -21.55d |
| TAEXCCCU080002 | CCTV Swiches Lighting panels Installation | 2027-07-22 → 2027-07-29 (+7d) | 2027-08-03 → 2027-08-10 (+7d) |  | -11.55d → -17.55d |
| TAEXCCCU080003 | Cable laying and connected with Panels | 2027-08-03 → 2027-08-10 (+7d) | 2027-08-14 → 2027-08-21 (+7d) |  | -11.55d → -17.55d |
| TAEXCCCU080004 | Pole Installation with IP Outdoor CCTV POE Camera | 2027-08-14 → 2027-08-21 (+7d) | 2027-08-25 → 2027-09-01 (+7d) |  | -11.55d → -17.55d |
| 9 | **Upgrade Local 09** |  | 2027-09-08 → 2027-09-09 (+1d) |  |  |
| 26 | **Electrical Works** |  | 2027-09-08 → 2027-09-07 (-1d) |  |  |

| ID | Task | Start | Finish | Total float |
| --- | --- | --- | --- | --- |
| TAEXELCU090007 | Earthing cables | 2027-09-06 → 2027-09-05 (-1d) | 2027-09-08 → 2027-09-07 (-1d) | -26.19d → -25.86d |
| 1 | **CCTV Works** | 2027-07-22 → 2027-07-29 (+7d) | 2027-09-03 → 2027-09-09 (+6d) |  |
| TAEXCCCU090001 | Pipe Installation with manhole | 2027-07-22 → 2027-07-29 (+7d) | 2027-07-31 → 2027-08-07 (+7d) | -15.55d → -21.55d |
| TAEXCCCU090002 | CCTV Swiches Lighting panels Installation | 2027-07-31 → 2027-08-07 (+7d) | 2027-08-11 → 2027-08-18 (+7d) | -15.55d → -21.55d |
| TAEXCCCU090003 | Cable laying and connected with Panels | 2027-08-11 → 2027-08-18 (+7d) | 2027-08-23 → 2027-08-30 (+7d) | -15.55d → -21.55d |
| TAEXCCCU090004 | Pole Installation with IP Outdoor CCTV POE Camera | 2027-08-23 → 2027-08-30 (+7d) | 2027-09-03 → 2027-09-09 (+6d) | -15.55d → -21.55d |
| 10 | **Upgrade Local 12** |  | 2027-09-13 → 2027-09-12 (-1d) |  |
| 18 | **Road works** | 2027-03-18 → 2027-02-28 (-18d) | 2027-06-24 → 2027-06-06 (-18d) |  |
| TAEXRDCU120002 | Precast Concret Kerps | 2027-03-18 → 2027-02-28 (-18d) | 2027-04-08 → 2027-03-21 (-18d) | 33.61d → 49.4d |
| TAEXRDCU120001 | BWC Asphalt Wearing Course with RC | 2027-05-25 → 2027-05-06 (-19d) | 2027-05-26 → 2027-05-08 (-18d) | 33.61d → 49.4d |
| TAEXRDCU120003 | Precast Interlock Works | 2027-05-26 → 2027-05-08 (-18d) | 2027-06-14 → 2027-05-26 (-19d) | 33.61d → 49.4d |
| TAEXRDCU120004 | Stone Paving works | 2027-06-14 → 2027-05-26 (-19d) | 2027-06-20 → 2027-06-01 (-19d) | 33.61d → 49.4d |
| TAEXRDCU120005 | Road Marking | 2027-06-20 → 2027-06-01 (-19d) | 2027-06-21 → 2027-06-02 (-19d) | 33.61d → 49.4d |
| TAEXRDCU120006 | Traffic Sinage | 2027-06-21 → 2027-06-02 (-19d) | 2027-06-24 → 2027-06-06 (-18d) | 33.61d → 49.4d |
| 19 | **Electrical Works** |  | 2027-09-13 → 2027-09-12 (-1d) |  |
| TAEXELCU120003 | Road Crossing Ducts |  | 2027-05-06 → 2027-05-05 (-1d) | 64.34d → 64.67d |
| TAEXELCU120005 | Cables Pulling |  | 2027-06-16 → 2027-06-14 (-2d) | 46.55d → 48.56d |
| TAEXELCU120004 | Trench Backfilling |  | 2027-06-09 → 2027-06-07 (-2d) | 46.55d → 48.56d |
| TAEXELCU120007 | Earthing cables | 2027-09-08 → 2027-09-07 (-1d) | 2027-09-13 → 2027-09-12 (-1d) | -26.19d → -25.86d |
| 1 | **Telecommunication Works** | 2027-05-02 → 2027-04-15 (-17d) | 2027-08-11 → 2027-07-26 (-16d) |  |
| TAEXTCCU120001 | Trench Cut off | 2027-05-02 → 2027-04-15 (-17d) | 2027-05-19 → 2027-05-03 (-16d) | -23.61d → -9.61d |
| TAEXTCCU120002 | Drawpit and PVC Pipes Installation | 2027-07-07 → 2027-06-21 (-16d) | 2027-07-18 → 2027-07-01 (-17d) | -23.61d → -9.61d |
| TAEXTCCU120003 | Road Crossing Ducts | 2027-07-18 → 2027-07-01 (-17d) | 2027-07-22 → 2027-07-06 (-16d) | -9.61d → 4.39d |
| TAEXTCCU120004 | Trench Backfilling | 2027-07-22 → 2027-07-06 (-16d) | 2027-08-11 → 2027-07-26 (-16d) | -9.61d → 4.39d |
| 15 | **CCTV Works** | 2027-04-18 → 2027-04-25 (+7d) | 2027-06-13 → 2027-06-20 (+7d) |  |
| TAEXCCCU120001 | Pipe Installation with manhole | 2027-04-18 → 2027-04-25 (+7d) | 2027-05-01 → 2027-05-08 (+7d) | -20.55d → -26.55d |
| TAEXCCCU120002 | CCTV Swiches Lighting panels Installation | 2027-05-01 → 2027-05-08 (+7d) | 2027-05-15 → 2027-05-22 (+7d) | 51.45d → 45.45d |
| TAEXCCCU120003 | Cable laying and connected with Panels | 2027-05-15 → 2027-05-22 (+7d) | 2027-05-27 → 2027-06-03 (+7d) | 51.45d → 45.45d |
| TAEXCCCU120004 | Pole Installation with IP Outdoor CCTV POE Camera | 2027-05-27 → 2027-06-03 (+7d) | 2027-06-13 → 2027-06-20 (+7d) | 51.45d → 45.45d |
| 2 | **Potable Networks** | 2026-11-21 → 2026-11-24 (+3d) | 2027-03-28 → 2027-03-31 (+3d) |  |
| TAEXPTCU120001 | Excavation works for Trench | 2026-11-21 → 2026-11-24 (+3d) | 2026-12-05 → 2026-12-08 (+3d) | 56.04d → 53.66d |
| TAEXPTCU120002 | Bedding Works | 2026-12-05 → 2026-12-08 (+3d) | 2026-12-07 → 2026-12-10 (+3d) | 95.04d → 92.66d |
| TAEXPTCU120003 | Install Pipes & Fittings | 2027-01-12 → 2027-01-16 (+4d) | 2027-01-21 → 2027-01-25 (+4d) | 64.04d → 61.66d |
| TAEXPTCU120004 | Backfilling Works for Trench | 2027-01-21 → 2027-01-25 (+4d) | 2027-02-11 → 2027-02-15 (+4d) | 64.04d → 61.66d |
| TAEXPTCU120005 | Install Valves with fittings | 2027-02-07 → 2027-02-10 (+3d) | 2027-02-11 → 2027-02-15 (+4d) | 64.04d → 61.66d |
| TAEXPTCU120006 | Install fire hydrent | 2027-02-11 → 2027-02-15 (+4d) | 2027-02-22 → 2027-02-25 (+3d) | 64.04d → 61.66d |
| TAEXPTCU120007 | Valve Chamber works | 2027-03-03 → 2027-03-07 (+4d) | 2027-03-22 → 2027-03-25 (+3d) | 56.04d → 53.66d |
| TAEXPTCU120008 | Inspection Test | 2027-03-22 → 2027-03-25 (+3d) | 2027-03-28 → 2027-03-31 (+3d) | 111.14d → 108.76d |
| 3 | **TSE Networks** |  | 2027-06-13 → 2027-05-31 (-13d) |  |
| TAEXTSCU120005 | Install Valves with fittings |  | 2027-05-23 → 2027-05-10 (-13d) | 45.42d → 56.3d |
| TAEXTSCU120006 | Valve Chamber works |  | 2027-06-07 → 2027-05-25 (-13d) | 45.42d → 56.3d |
| TAEXTSCU120001 | Excavation works for Trench | 2027-01-26 → 2027-01-13 (-13d) | 2027-02-21 → 2027-02-08 (-13d) | 45.42d → 56.3d |
| TAEXTSCU120002 | Bedding Works | 2027-02-21 → 2027-02-08 (-13d) | 2027-02-23 → 2027-02-10 (-13d) | 95.42d → 106.3d |
| TAEXTSCU120003 | Install Pipes & Fittings | 2027-04-22 → 2027-04-10 (-12d) | 2027-05-02 → 2027-04-19 (-13d) | 45.42d → 56.3d |
| TAEXTSCU120004 | Backfilling Works for Trench | 2027-05-02 → 2027-04-19 (-13d) | 2027-05-23 → 2027-05-10 (-13d) | 45.42d → 56.3d |
| TAEXTSCU120007 | Inspection Test | 2027-06-07 → 2027-05-25 (-13d) | 2027-06-13 → 2027-05-31 (-13d) | 45.42d → 56.3d |
| 12 | **Sewerage Networks** | 2026-11-17 → 2026-11-16 (-1d) | 2027-01-30 → 2027-01-28 (-2d) |  |
| TAEXSWCU120001 | Excavation works for Trench | 2026-11-17 → 2026-11-16 (-1d) | 2026-12-06 → 2026-12-05 (-1d) | 139.63d → 141.38d |
| TAEXSWCU120002 | Bedding Works | 2026-12-06 → 2026-12-05 (-1d) | 2026-12-10 → 2026-12-09 (-1d) | 155.08d → 156.38d |
| TAEXSWCU120003 | Install GRP Pipes & Fittings | 2026-12-10 → 2026-12-09 (-1d) | 2026-12-27 → 2026-12-26 (-1d) | 155.08d → 156.38d |
| TAEXSWCU120004 | Backfilling Works for Trench | 2026-12-29 → 2026-12-28 (-1d) | 2027-01-13 → 2027-01-12 (-1d) | 155.08d → 156.38d |
| TAEXSWCU120005 | Manhole Installation with backfilling | 2027-01-11 → 2027-01-10 (-1d) | 2027-01-25 → 2027-01-24 (-1d) | 155.08d → 156.38d |
| TAEXSWCU120006 | Leakage Test | 2027-01-25 → 2027-01-24 (-1d) | 2027-01-30 → 2027-01-28 (-2d) | 155.08d → 156.38d |
| 4 | **Storm Networks** | 2027-05-12 → 2027-05-06 (-6d) | 2027-07-29 → 2027-07-24 (-5d) |  |
| TAEXSTCU120001 | Excavation works for Trench | 2027-05-12 → 2027-05-06 (-6d) | 2027-06-02 → 2027-05-27 (-6d) | 12.79d → 17.92d |
| TAEXSTCU120002 | Bedding Works | 2027-06-02 → 2027-05-27 (-6d) | 2027-06-07 → 2027-06-01 (-6d) | 12.79d → 17.92d |
| TAEXSTCU120003 | Install GRP Pipes & Fittings | 2027-06-07 → 2027-06-01 (-6d) | 2027-06-23 → 2027-06-17 (-6d) | 12.79d → 17.92d |
| TAEXSTCU120004 | Backfilling Works for Trench | 2027-06-26 → 2027-06-20 (-6d) | 2027-07-11 → 2027-07-05 (-6d) | 12.79d → 17.92d |
| TAEXSTCU120005 | Manhole Installation with backfilling | 2027-06-27 → 2027-06-21 (-6d) | 2027-07-11 → 2027-07-05 (-6d) | 12.79d → 17.92d |
| TAEXSTCU120006 | Install Catch Basin with UPVC Pipes & Fittings | 2027-07-11 → 2027-07-05 (-6d) | 2027-07-25 → 2027-07-19 (-6d) | 12.79d → 17.92d |
| TAEXSTCU120007 | Leakage Test | 2027-07-25 → 2027-07-19 (-6d) | 2027-07-29 → 2027-07-24 (-5d) | 12.79d → 17.92d |
| 11 | **Upgrade Local 14** |  | 2027-09-15 → 2027-09-14 (-1d) |  |
| 21 | **Electrical Works** |  | 2027-09-15 → 2027-09-14 (-1d) |  |
| TAEXELCU140007 | Earthing cables | 2027-09-13 → 2027-09-12 (-1d) | 2027-09-15 → 2027-09-14 (-1d) | -26.19d → -25.86d |
| 22 | **CCTV Works** | 2027-07-04 → 2027-07-11 (+7d) | 2027-08-16 → 2027-08-23 (+7d) |  |
| TAEXCCCU140001 | Pipe Installation with manhole | 2027-07-04 → 2027-07-11 (+7d) | 2027-07-12 → 2027-07-19 (+7d) | -20.55d → -26.55d |
| TAEXCCCU140002 | CCTV Swiches Lighting panels Installation | 2027-07-12 → 2027-07-19 (+7d) | 2027-07-26 → 2027-08-02 (+7d) | -20.55d → -26.55d |
| TAEXCCCU140003 | Cable laying and connected with Panels | 2027-07-26 → 2027-08-02 (+7d) | 2027-08-04 → 2027-08-11 (+7d) | -3.55d → -9.55d |
| TAEXCCCU140004 | Pole Installation with IP Outdoor CCTV POE Camera | 2027-08-04 → 2027-08-11 (+7d) | 2027-08-16 → 2027-08-23 (+7d) | -3.55d → -9.55d |
| 12 | **Upgrade Local 18** | 2027-07-22 → 2027-07-29 (+7d) | 2027-08-25 → 2027-09-01 (+7d) |  |

| ID | Task | Start | Finish | Complete | Total float |
| --- | --- | --- | --- | --- | --- |
| 27 | **CCTV Works** | 2027-07-22 → 2027-07-29 (+7d) | 2027-08-25 → 2027-09-01 (+7d) |  |  |
| TAEXCCCU180001 | Pipe Installation with manhole | 2027-07-22 → 2027-07-29 (+7d) | 2027-08-01 → 2027-08-08 (+7d) |  | -11.55d → -17.55d |
| TAEXCCCU180002 | CCTV Swiches Lighting panels Installation | 2027-08-01 → 2027-08-08 (+7d) | 2027-08-11 → 2027-08-18 (+7d) |  | -11.55d → -17.55d |
| TAEXCCCU180003 | Cable laying and connected with Panels | 2027-08-11 → 2027-08-18 (+7d) | 2027-08-19 → 2027-08-26 (+7d) |  | -11.55d → -17.55d |
| TAEXCCCU180004 | Pole Installation with IP Outdoor CCTV POE Camera | 2027-08-19 → 2027-08-26 (+7d) | 2027-08-25 → 2027-09-01 (+7d) |  | -11.55d → -17.55d |
| 13 | **Upgrade Local 20** |  | 2027-09-20 → 2027-09-19 (-1d) |  |  |
| 16 | **Electrical Works** |  | 2027-09-20 → 2027-09-19 (-1d) |  |  |
| TAEXELCU200005 | Cables Pulling |  | 2027-05-10 → 2027-05-01 (-9d) |  | 69.06d → 77.82d |
| TAEXELCU200004 | Trench Backfilling |  | 2027-05-09 → 2027-04-28 (-11d) |  | 69.06d → 77.82d |
| TAEXELCU200002 | Drawpit and PVC Pipes Installation |  | 2027-04-25 → 2027-04-15 (-10d) | 13% → 25% | 68.02d → 76.3d |
| TAEXELCU200003 | Road Crossing Ducts |  | 2027-04-29 → 2027-04-19 (-10d) | 13% → 25% | 69.06d → 77.82d |
| TAEXELCU200006 | Poles RC Foundation | 2027-04-25 → 2027-04-15 (-10d) | 2027-05-03 → 2027-04-24 (-9d) |  | 68.02d → 76.3d |
| TAEXELCU200008 | Lighting Pole Installation with Luminares | 2027-05-03 → 2027-04-24 (-9d) | 2027-05-13 → 2027-05-04 (-9d) |  | 68.02d → 76.3d |
| TAEXELCU200009 | Install Substation & RMU | 2027-05-10 → 2027-05-01 (-9d) | 2027-05-20 → 2027-05-11 (-9d) |  | 69.06d → 77.82d |
| TAEXELCU200007 | Earthing cables | 2027-09-15 → 2027-09-14 (-1d) | 2027-09-20 → 2027-09-19 (-1d) |  | -26.19d → -25.86d |
| 14 | **CCTV Works** | 2027-03-16 → 2027-03-23 (+7d) | 2027-09-04 → 2027-09-11 (+7d) |  |  |
| TAEXCCCU200001 | Pipe Installation with manhole | 2027-03-16 → 2027-03-23 (+7d) | 2027-03-28 → 2027-04-04 (+7d) |  | -20.55d → -26.55d |
| TAEXCCCU200002 | CCTV Swiches Lighting panels Installation | 2027-07-26 → 2027-08-02 (+7d) | 2027-08-10 → 2027-08-17 (+7d) |  | -20.55d → -26.55d |
| TAEXCCCU200003 | Cable laying and connected with Panels | 2027-08-10 → 2027-08-17 (+7d) | 2027-08-22 → 2027-08-29 (+7d) |  | -20.55d → -26.55d |
| TAEXCCCU200004 | Pole Installation with IP Outdoor CCTV POE Camera | 2027-08-22 → 2027-08-29 (+7d) | 2027-09-04 → 2027-09-11 (+7d) |  | -20.55d → -26.55d |
| 1 | **Potable Networks** | 2026-10-26 → 2026-11-02 (+7d) | 2027-01-21 → 2027-01-25 (+4d) |  |  |
| TAEXPTCU200007 | Valve Chamber works | 2026-10-26 → 2026-11-02 (+7d) | 2026-11-14 → 2026-11-21 (+7d) |  | 111.9d → 105.9d |
| TAEXPTCU200008 | Inspection Test | 2026-11-15 → 2026-11-22 (+7d) | 2026-11-19 → 2026-11-26 (+7d) |  | 221d → 215d |
| TAEXPTCU200001 | Excavation works for Trench | 2026-12-05 → 2026-12-08 (+3d) | 2026-12-15 → 2026-12-19 (+4d) |  | 56.04d → 53.66d |
| TAEXPTCU200002 | Bedding Works | 2026-12-15 → 2026-12-19 (+4d) | 2026-12-17 → 2026-12-21 (+4d) |  | 57.04d → 54.66d |
| TAEXPTCU200003 | Install Pipes & Fittings | 2026-12-17 → 2026-12-21 (+4d) | 2026-12-27 → 2026-12-30 (+3d) |  | 57.04d → 54.66d |
| TAEXPTCU200004 | Backfilling Works for Trench | 2026-12-27 → 2026-12-30 (+3d) | 2027-01-14 → 2027-01-18 (+4d) |  | 162.14d → 159.76d |
| TAEXPTCU200005 | Install Valves with fittings | 2027-01-10 → 2027-01-13 (+3d) | 2027-01-14 → 2027-01-18 (+4d) |  | 162.14d → 159.76d |
| TAEXPTCU200006 | Install fire hydrent | 2027-01-14 → 2027-01-18 (+4d) | 2027-01-21 → 2027-01-25 (+4d) |  | 162.14d → 159.76d |
| 2 | **TSE Networks** | 2027-02-21 → 2027-02-08 (-13d) | 2027-05-11 → 2027-04-28 (-13d) |  |  |
| TAEXTSCU200001 | Excavation works for Trench | 2027-02-21 → 2027-02-08 (-13d) | 2027-03-16 → 2027-03-03 (-13d) |  | 45.42d → 56.3d |
| TAEXTSCU200002 | Bedding Works | 2027-03-16 → 2027-03-03 (-13d) | 2027-03-18 → 2027-03-06 (-12d) |  | 62.42d → 73.3d |
| TAEXTSCU200003 | Install Pipes & Fittings | 2027-03-18 → 2027-03-06 (-12d) | 2027-03-28 → 2027-03-15 (-13d) |  | 62.42d → 73.3d |
| TAEXTSCU200004 | Backfilling Works for Trench | 2027-03-28 → 2027-03-15 (-13d) | 2027-04-15 → 2027-04-03 (-12d) |  | 73.92d → 84.8d |
| TAEXTSCU200005 | Install Valves with fittings | 2027-04-11 → 2027-03-29 (-13d) | 2027-04-15 → 2027-04-03 (-12d) |  | 73.92d → 84.8d |
| TAEXTSCU200006 | Valve Chamber works | 2027-04-15 → 2027-04-03 (-12d) | 2027-05-05 → 2027-04-22 (-13d) |  | 73.92d → 84.8d |
| TAEXTSCU200007 | Inspection Test | 2027-05-05 → 2027-04-22 (-13d) | 2027-05-11 → 2027-04-28 (-13d) |  | 73.92d → 84.8d |
| 3 | **Sewerage Networks** | 2026-12-06 → 2026-12-05 (-1d) | 2027-02-13 → 2027-02-11 (-2d) |  |  |
| TAEXSWCU200001 | Excavation works for Trench | 2026-12-06 → 2026-12-05 (-1d) | 2026-12-23 → 2026-12-22 (-1d) |  | 139.63d → 141.38d |
| TAEXSWCU200002 | Bedding Works | 2026-12-23 → 2026-12-22 (-1d) | 2026-12-27 → 2026-12-26 (-1d) |  | 143.08d → 144.38d |
| TAEXSWCU200003 | Install GRP Pipes & Fittings | 2026-12-27 → 2026-12-26 (-1d) | 2027-01-10 → 2027-01-09 (-1d) |  | 143.08d → 144.38d |
| TAEXSWCU200004 | Backfilling Works for Trench | 2027-01-07 → 2027-01-06 (-1d) | 2027-01-27 → 2027-01-26 (-1d) |  | 143.08d → 144.38d |
| TAEXSWCU200005 | Manhole Installation with backfilling | 2027-01-20 → 2027-01-19 (-1d) | 2027-02-08 → 2027-02-07 (-1d) |  | 143.08d → 144.38d |
| TAEXSWCU200006 | Leakage Test | 2027-02-08 → 2027-02-07 (-1d) | 2027-02-13 → 2027-02-11 (-2d) |  | 143.08d → 144.38d |
| 14 | **Upgrade Local 29** |  | 2027-09-22 → 2027-09-21 (-1d) |  |  |
| 25 | **Road Works** |  | 2027-05-16 → 2027-04-27 (-19d) |  |  |
| TAEXRDCU290002 | MBC1 layer | 2027-03-01 → 2027-02-10 (-19d) | 2027-03-02 → 2027-02-11 (-19d) |  | 33.61d → 49.4d |
| TAEXRDCU290003 | BBC Base Course | 2027-03-02 → 2027-02-11 (-19d) | 2027-03-07 → 2027-02-16 (-19d) |  | 33.61d → 49.4d |
| TAEXRDCU290005 | Precast Concret Kerps | 2027-03-07 → 2027-02-16 (-19d) | 2027-03-18 → 2027-02-28 (-18d) |  | 33.61d → 49.4d |
| TAEXRDCU290004 | BWC Asphalt Wearing Course with RC | 2027-03-18 → 2027-02-28 (-18d) | 2027-03-22 → 2027-03-03 (-19d) |  | 67.61d → 83.4d |
| TAEXRDCU290006 | Precast Interlock Works | 2027-05-02 → 2027-04-13 (-19d) | 2027-05-11 → 2027-04-22 (-19d) |  | 67.61d → 83.4d |
| TAEXRDCU290007 | Stone Paving works | 2027-05-11 → 2027-04-22 (-19d) | 2027-05-13 → 2027-04-25 (-18d) |  | 67.61d → 83.4d |
| TAEXRDCU290008 | Road Marking | 2027-05-13 → 2027-04-25 (-18d) | 2027-05-15 → 2027-04-26 (-19d) |  | 67.61d → 83.4d |
| TAEXRDCU290009 | Traffic Sinage | 2027-05-15 → 2027-04-26 (-19d) | 2027-05-16 → 2027-04-27 (-19d) |  | 67.61d → 83.4d |
| 20 | **Electrical Works** |  | 2027-09-22 → 2027-09-21 (-1d) |  |  |
| TAEXELCU290007 | Earthing cables | 2027-09-20 → 2027-09-19 (-1d) | 2027-09-22 → 2027-09-21 (-1d) |  | -26.19d → -25.86d |
| 1 | **Telecommunication Works** | 2027-07-03 → 2027-06-16 (-17d) | 2027-08-09 → 2027-07-24 (-16d) |  |  |
| TAEXTCCU290001 | Trench Cut off | 2027-07-03 → 2027-06-16 (-17d) | 2027-07-14 → 2027-06-28 (-16d) |  | -20.61d → -6.61d |
| TAEXTCCU290002 | Drawpit and PVC Pipes Installation | 2027-07-18 → 2027-07-01 (-17d) | 2027-07-25 → 2027-07-08 (-17d) |  | -23.61d → -9.61d |
| TAEXTCCU290003 | Road Crossing Ducts | 2027-07-25 → 2027-07-08 (-17d) | 2027-07-28 → 2027-07-12 (-16d) |  | -7.61d → 6.39d |
| TAEXTCCU290004 | Trench Backfilling | 2027-07-28 → 2027-07-12 (-16d) | 2027-08-09 → 2027-07-24 (-16d) |  | -7.61d → 6.39d |
| 21 | **CCTV Works** | 2027-06-26 → 2027-07-03 (+7d) | 2027-08-07 → 2027-08-14 (+7d) |  |  |
| TAEXCCCU290001 | Pipe Installation with manhole | 2027-06-26 → 2027-07-03 (+7d) | 2027-07-04 → 2027-07-11 (+7d) |  | -20.55d → -26.55d |
| TAEXCCCU290002 | CCTV Swiches Lighting panels Installation | 2027-07-04 → 2027-07-11 (+7d) | 2027-07-15 → 2027-07-22 (+7d) |  | -5.55d → -11.55d |
| TAEXCCCU290003 | Cable laying and connected with Panels | 2027-07-15 → 2027-07-22 (+7d) | 2027-07-26 → 2027-08-02 (+7d) |  | 4.45d → -1.55d |
| TAEXCCCU290004 | Pole Installation with IP Outdoor CCTV POE Camera | 2027-07-26 → 2027-08-02 (+7d) | 2027-08-07 → 2027-08-14 (+7d) |  | 4.45d → -1.55d |
| 2 | **Potable Networks** |  | 2027-06-12 → 2027-06-15 (+3d) |  |  |
| TAEXPTCU290007 | Valve Chamber works | 2027-05-25 → 2027-05-29 (+4d) | 2027-06-12 → 2027-06-15 (+3d) |  | 56.04d → 53.66d |
| 3 | **TSE Networks** |  | 2027-05-02 → 2027-04-19 (-13d) |  |  |
| TAEXTSCU290006 | Valve Chamber works | 2027-04-14 → 2027-04-01 (-13d) | 2027-05-02 → 2027-04-19 (-13d) |  | 81.92d → 92.8d |

| ID | Task | Start | Finish | Complete | Total float |
| --- | --- | --- | --- | --- | --- |
| 15 | **Upgrade Local 32** |  | 2027-09-27 → 2027-09-26 (-1d) |  |  |
| 17 | **Electrical Works** |  | 2027-09-27 → 2027-09-26 (-1d) |  |  |
| TAEXELCU320002 | Drawpit and PVC Pipes Installation | 2027-04-17 → 2027-04-13 (-4d) | 2027-04-21 → 2027-04-18 (-3d) |  | 71.85d → 74.92d |
| TAEXELCU320003 | Road Crossing Ducts | 2027-04-21 → 2027-04-18 (-3d) | 2027-05-05 → 2027-05-02 (-3d) |  | 74.85d → 77.92d |
| TAEXELCU320006 | Poles RC Foundation | 2027-04-21 → 2027-04-18 (-3d) | 2027-04-29 → 2027-04-26 (-3d) |  | 71.85d → 74.92d |
| TAEXELCU320008 | Lighting Pole Installation with Luminares | 2027-04-29 → 2027-04-26 (-3d) | 2027-05-10 → 2027-05-06 (-4d) |  | 71.85d → 74.92d |
| TAEXELCU320004 | Trench Backfilling | 2027-05-05 → 2027-05-02 (-3d) | 2027-05-24 → 2027-05-20 (-4d) |  | 74.85d → 77.92d |
| TAEXELCU320005 | Cables Pulling | 2027-05-24 → 2027-05-20 (-4d) | 2027-05-29 → 2027-05-25 (-4d) |  | 74.85d → 77.92d |
| TAEXELCU320007 | Earthing cables | 2027-09-22 → 2027-09-21 (-1d) | 2027-09-27 → 2027-09-26 (-1d) |  | -26.19d → -25.86d |
| 4 | **Telecommunication Works** | 2027-03-28 → 2027-04-04 (+7d) | 2027-09-03 → 2027-08-18 (-16d) |  |  |
| TAEXCCCU320001 | Pipe Installation with manhole | 2027-03-28 → 2027-04-04 (+7d) | 2027-04-08 → 2027-04-15 (+7d) |  | -20.55d → -26.55d |
| TAEXCCCU320002 | CCTV Swiches Lighting panels Installation | 2027-07-25 → 2027-07-08 (-17d) | 2027-08-09 → 2027-07-24 (-16d) |  | -23.61d → -9.61d |
| TAEXCCCU320003 | Cable laying and connected with Panels | 2027-08-09 → 2027-07-24 (-16d) | 2027-08-21 → 2027-08-04 (-17d) |  | -19.61d → -5.61d |
| TAEXCCCU320004 | Pole Installation with IP Outdoor CCTV POE Camera | 2027-08-21 → 2027-08-04 (-17d) | 2027-09-03 → 2027-08-18 (-16d) |  | -19.61d → -5.61d |
| 16 | **Potable Networks** | 2026-11-15 → 2026-11-22 (+7d) | 2027-02-01 → 2027-02-04 (+3d) |  |  |
| TAEXPTCU320007 | Valve Chamber works | 2026-11-15 → 2026-11-22 (+7d) | 2026-12-03 → 2026-12-10 (+7d) |  | 111.9d → 105.9d |
| TAEXPTCU320008 | Inspection Test | 2026-12-05 → 2026-12-12 (+7d) | 2026-12-09 → 2026-12-16 (+7d) |  | 199d → 193d |
| TAEXPTCU320001 | Excavation works for Trench | 2026-12-15 → 2026-12-19 (+4d) | 2026-12-26 → 2026-12-29 (+3d) |  | 56.04d → 53.66d |
| TAEXPTCU320002 | Bedding Works | 2026-12-26 → 2026-12-29 (+3d) | 2026-12-28 → 2026-12-31 (+3d) |  | 56.04d → 53.66d |
| TAEXPTCU320003 | Install Pipes & Fittings | 2026-12-28 → 2026-12-31 (+3d) | 2027-01-06 → 2027-01-10 (+4d) |  | 56.04d → 53.66d |
| TAEXPTCU320004 | Backfilling Works for Trench | 2027-01-06 → 2027-01-10 (+4d) | 2027-01-25 → 2027-01-28 (+3d) |  | 56.04d → 53.66d |
| TAEXPTCU320005 | Install Valves with fittings | 2027-01-20 → 2027-01-24 (+4d) | 2027-01-25 → 2027-01-28 (+3d) |  | 56.04d → 53.66d |
| TAEXPTCU320006 | Install fire hydrent | 2027-01-25 → 2027-01-28 (+3d) | 2027-02-01 → 2027-02-04 (+3d) |  | 56.04d → 53.66d |
| 1 | **TSE Networks** |  | 2027-05-11 → 2027-04-28 (-13d) |  |  |
| TAEXTSCU320005 | Install Valves with fittings |  | 2027-04-15 → 2027-04-03 (-12d) |  | 73.92d → 84.8d |
| TAEXTSCU320004 | Backfilling Works for Trench | 2027-03-28 → 2027-03-15 (-13d) | 2027-04-15 → 2027-04-03 (-12d) |  | 73.92d → 84.8d |
| TAEXTSCU320006 | Valve Chamber works | 2027-04-15 → 2027-04-03 (-12d) | 2027-05-05 → 2027-04-22 (-13d) |  | 73.92d → 84.8d |
| TAEXTSCU320007 | Inspection Test | 2027-05-05 → 2027-04-22 (-13d) | 2027-05-11 → 2027-04-28 (-13d) |  | 73.92d → 84.8d |
| 16 | **Upgrade Local 33** |  | 2027-09-29 → 2027-09-28 (-1d) |  |  |
| 27 | **Road Works** | 2027-05-13 → 2027-04-25 (-18d) | 2027-06-09 → 2027-05-22 (-18d) |  |  |
| TAEXRDCU330002 | Precast Concret Kerps | 2027-05-13 → 2027-04-25 (-18d) | 2027-05-25 → 2027-05-06 (-19d) |  | 46.61d → 62.4d |
| TAEXRDCU330001 | BWC Asphalt Wearing Course with RC | 2027-05-25 → 2027-05-06 (-19d) | 2027-05-26 → 2027-05-08 (-18d) |  | 46.61d → 62.4d |
| TAEXRDCU330003 | Precast Interlock Works | 2027-05-26 → 2027-05-08 (-18d) | 2027-06-05 → 2027-05-17 (-19d) |  | 46.61d → 62.4d |
| TAEXRDCU330004 | Stone Paving works | 2027-06-05 → 2027-05-17 (-19d) | 2027-06-07 → 2027-05-19 (-19d) |  | 46.61d → 62.4d |
| TAEXRDCU330005 | Road Marking | 2027-06-07 → 2027-05-19 (-19d) | 2027-06-08 → 2027-05-20 (-19d) |  | 46.61d → 62.4d |
| TAEXRDCU330006 | Traffic Sinage | 2027-06-08 → 2027-05-20 (-19d) | 2027-06-09 → 2027-05-22 (-18d) |  | 46.61d → 62.4d |
| 18 | **Electrical Works** |  | 2027-09-29 → 2027-09-28 (-1d) |  |  |
| TAEXELCU330007 | Earthing cables | 2027-09-27 → 2027-09-26 (-1d) | 2027-09-29 → 2027-09-28 (-1d) |  | -26.19d → -25.86d |
| 1 | **Telecommunication Works** | 2027-04-26 → 2027-04-10 (-16d) | 2027-08-28 → 2027-08-11 (-17d) |  |  |
| TAEXTCCU330001 | Trench Cut off | 2027-04-26 → 2027-04-10 (-16d) | 2027-05-02 → 2027-04-15 (-17d) |  | -23.61d → -9.61d |
| TAEXTCCU330002 | Drawpit and PVC Pipes Installation | 2027-08-09 → 2027-07-24 (-16d) | 2027-08-14 → 2027-07-28 (-17d) |  | -23.61d → -9.61d |
| TAEXTCCU330003 | Road Crossing Ducts | 2027-08-14 → 2027-07-28 (-17d) | 2027-08-17 → 2027-08-01 (-16d) |  | -23.61d → -9.61d |
| TAEXTCCU330004 | Trench Backfilling | 2027-08-17 → 2027-08-01 (-16d) | 2027-08-28 → 2027-08-11 (-17d) |  | -23.61d → -9.61d |
| 17 | **CCTV Works** | 2027-04-08 → 2027-04-15 (+7d) | 2027-08-18 → 2027-08-25 (+7d) |  |  |
| TAEXCCCU330001 | Pipe Installation with manhole | 2027-04-08 → 2027-04-15 (+7d) | 2027-04-18 → 2027-04-25 (+7d) |  | -20.55d → -26.55d |
| TAEXCCCU330002 | CCTV Swiches Lighting panels Installation | 2027-07-15 → 2027-07-22 (+7d) | 2027-07-27 → 2027-08-03 (+7d) |  | -5.55d → -11.55d |
| TAEXCCCU330003 | Cable laying and connected with Panels | 2027-07-27 → 2027-08-03 (+7d) | 2027-08-07 → 2027-08-14 (+7d) |  | -5.55d → -11.55d |
| TAEXCCCU330004 | Pole Installation with IP Outdoor CCTV POE Camera | 2027-08-07 → 2027-08-14 (+7d) | 2027-08-18 → 2027-08-25 (+7d) |  | -5.55d → -11.55d |
| 2 | **Potable Networks** | 2026-12-26 → 2026-12-29 (+3d) | 2027-03-07 → 2027-03-10 (+3d) |  |  |
| TAEXPTCU330001 | Excavation works for Trench | 2026-12-26 → 2026-12-29 (+3d) | 2026-12-30 → 2027-01-03 (+4d) |  | 65.04d → 62.66d |
| TAEXPTCU330002 | Bedding Works | 2026-12-30 → 2027-01-03 (+4d) | 2027-01-02 → 2027-01-05 (+3d) |  | 65.04d → 62.66d |
| TAEXPTCU330003 | Install Pipes & Fittings | 2027-01-06 → 2027-01-10 (+4d) | 2027-01-12 → 2027-01-16 (+4d) |  | 61.04d → 58.66d |
| TAEXPTCU330004 | Backfilling Works for Trench | 2027-01-12 → 2027-01-16 (+4d) | 2027-01-26 → 2027-01-30 (+4d) |  | 61.04d → 58.66d |
| TAEXPTCU330005 | Install Valves with fittings | 2027-01-21 → 2027-01-25 (+4d) | 2027-01-26 → 2027-01-30 (+4d) |  | 61.04d → 58.66d |
| TAEXPTCU330006 | Install fire hydrent | 2027-02-01 → 2027-02-04 (+3d) | 2027-02-07 → 2027-02-10 (+3d) |  | 56.04d → 53.66d |
| TAEXPTCU330007 | Valve Chamber works | 2027-02-07 → 2027-02-10 (+3d) | 2027-03-03 → 2027-03-07 (+4d) |  | 56.04d → 53.66d |
| TAEXPTCU330008 | Inspection Test | 2027-03-03 → 2027-03-07 (+4d) | 2027-03-07 → 2027-03-10 (+3d) |  | 129.14d → 126.76d |
| 3 | **TSE Networks** | 2027-03-16 → 2027-03-03 (-13d) | 2027-05-27 → 2027-05-15 (-12d) |  |  |
| TAEXTSCU330001 | Excavation works for Trench | 2027-03-16 → 2027-03-03 (-13d) | 2027-04-14 → 2027-04-01 (-13d) |  | 45.42d → 56.3d |
| TAEXTSCU330002 | Bedding Works | 2027-04-14 → 2027-04-01 (-13d) | 2027-04-17 → 2027-04-04 (-13d) |  | 45.42d → 56.3d |
| TAEXTSCU330003 | Install Pipes & Fittings | 2027-04-17 → 2027-04-04 (-13d) | 2027-04-22 → 2027-04-10 (-12d) |  | 45.42d → 56.3d |
| TAEXTSCU330004 | Backfilling Works for Trench | 2027-04-22 → 2027-04-10 (-12d) | 2027-05-06 → 2027-04-24 (-12d) |  | 59.92d → 70.8d |
| TAEXTSCU330005 | Install Valves with fittings | 2027-05-02 → 2027-04-19 (-13d) | 2027-05-06 → 2027-04-24 (-12d) |  | 59.92d → 70.8d |
| TAEXTSCU330006 | Valve Chamber works | 2027-05-06 → 2027-04-24 (-12d) | 2027-05-24 → 2027-05-11 (-13d) |  | 59.92d → 70.8d |
| TAEXTSCU330007 | Inspection Test | 2027-05-24 → 2027-05-11 (-13d) | 2027-05-27 → 2027-05-15 (-12d) |  | 59.92d → 70.8d |
| 4 | **Sewerage Networks** |  | 2027-02-17 → 2026-11-01 (-108d) |  |  |
| TAEXSWCU330006 | Leakage Test |  | 2027-02-17 → 2026-11-01 A (-108d) | 85% → 100% | 139.63d → none |
| TAEXSWCU330004 | Backfilling Works for Trench | 2027-02-02 → 2026-10-29 A (-96d) | 2027-02-16 → 2026-10-31 A (-108d) | 0% → 100% | 139.63d → none |
| TAEXSTCU330001 | Excavation works for Trench |  | 2027-05-12 → 2026-11-01 A (-192d) | 70% → 100% | 12.79d → none |
| TAEXSTCU330002 | Bedding Works | 2027-05-12 → 2026-10-31 A (-193d) | 2027-05-15 → 2026-11-01 A (-195d) | 0% → 100% | 19.79d → none |

| ID | Task | Start | Finish | Complete | Total float |
| --- | --- | --- | --- | --- | --- |
| TAEXSTCU330003 | Install GRP Pipes & Fittings | 2027-05-15 → 2026-11-01 A (-195d) | 2027-05-23 → 2026-11-01 A (-203d) | 0% → 100% | 19.79d → none |
| TAEXSTCU330004 | Backfilling Works for Trench | 2027-05-26 → 2027-05-09 (-17d) | 2027-06-09 → 2027-05-23 (-17d) |  | 19.79d → 34.02d |
| TAEXSTCU330005 | Manhole Installation with backfilling | 2027-06-08 → 2027-05-22 (-17d) | 2027-06-21 → 2027-06-03 (-18d) |  | 19.79d → 34.02d |
| 17 | **Pond** |  | 2027-01-05 → 2027-01-11 (+6d) |  |  |
| 21 | **Storm Water Pond** |  | 2027-01-05 → 2027-01-11 (+6d) |  |  |
| TAEXSTCSWP0007 | Excavation works for ponds 7th part |  | 2026-11-10 → 2026-11-16 (+6d) |  | 207.75d → 202.95d |
| TAEXSTCSWP0009 | Riprap Works part 1 |  | 2026-11-11 → 2026-11-17 (+6d) |  | 207.75d → 202.95d |
| TAEXSTCSWP0012 | Outfall structure works |  | 2027-01-05 → 2027-01-11 (+6d) |  | 207.75d → 202.95d |
| TAEXSTCSWP0010 | Riprap Works Part 2 |  | 2026-11-15 → 2026-11-21 (+6d) |  | 207.75d → 202.95d |
| TAEXSTCSWP0011 | Sand Marl Mix Ballast layer | 2026-11-15 → 2026-11-21 (+6d) | 2026-11-29 → 2026-12-05 (+6d) |  | 207.75d → 202.95d |
| 22 | **CLOSE OUT** | 2027-01-31 → 2027-01-23 (-8d) |  |  |  |
| 3 | **Final Testing and Commmisionning** | 2027-01-31 → 2027-01-23 (-8d) | 2027-09-25 → 2027-10-02 (+7d) |  |  |
| 1 | **Final Test & commisionning Zone 1** | 2027-03-04 → 2027-03-02 (-2d) | 2027-06-29 → 2027-07-06 (+7d) |  |  |
| TACOFTFT0007 | Sewerage Networks | 2027-03-04 → 2027-03-02 (-2d) | 2027-03-11 → 2027-03-09 (-2d) |  | 141.56d → 143.58d |
| TACOFTFT0008 | Storm Water Drainage Networks | 2027-03-04 → 2027-03-02 (-2d) | 2027-03-13 → 2027-03-10 (-3d) |  | 136.56d → 138.58d |
| TACOFTFT0006 | TSE Networks | 2027-03-27 → 2027-03-14 (-13d) | 2027-03-31 → 2027-03-18 (-13d) |  | 124.32d → 135.2d |
| TACOFTFT0005 | Potable Water Networks | 2027-04-22 → 2027-04-10 (-12d) | 2027-04-27 → 2027-04-14 (-13d) |  | 101.52d → 112.8d |
| TACOFTFT0003 | Telecommunications Networks | 2027-06-10 → 2027-05-27 (-14d) | 2027-06-15 → 2027-06-01 (-14d) |  | 53.85d → 65.05d |
| TACOFTFT0001 | Road Works | 2027-06-24 → 2027-06-02 (-22d) | 2027-06-29 → 2027-06-07 (-22d) |  | 22.19d → 41.32d |
| TACOFTFT0002 | Electrical NetWorks | 2027-06-12 → 2027-06-02 (-10d) | 2027-06-20 → 2027-06-10 (-10d) |  | 49.19d → 57.05d |
| TACOFTFT0004 | CCTV Networks | 2027-06-21 → 2027-06-28 (+7d) | 2027-06-29 → 2027-07-06 (+7d) |  | 47.45d → 41.45d |
| 2 | **Final Test & commisionning Zone 2** | 2027-01-31 → 2027-01-23 (-8d) | 2027-09-14 → 2027-09-21 (+7d) |  |  |
| TACOFTFT0015 | Sewerage Networks | 2027-01-31 → 2027-01-23 (-8d) | 2027-02-07 → 2027-01-30 (-8d) |  | 148.06d → 155.6d |
| TACOFTFT0016 | Storm Water Drainage Networks | 2027-03-31 → 2027-03-24 (-7d) | 2027-04-08 → 2027-04-01 (-7d) |  | 108.41d → 114.43d |
| TACOFTFT0014 | TSE Networks | 2027-04-03 → 2027-03-31 (-3d) | 2027-04-07 → 2027-04-05 (-2d) |  | 125.56d → 127.58d |
| TACOFTFT0013 | Potable Water Networks | 2027-04-01 → 2027-04-04 (+3d) | 2027-04-06 → 2027-04-08 (+2d) |  | 124.44d → 122.06d |
| TACOFTFT0010 | Electrical NetWorks | 2027-06-10 → 2027-06-01 (-9d) | 2027-06-19 → 2027-06-09 (-10d) |  | 37.85d → 45.05d |
| TACOFTFT0011 | Telecommunications Networks | 2027-06-29 → 2027-06-16 (-13d) | 2027-07-07 → 2027-06-24 (-13d) |  | 20.53d → 31.73d |
| TACOFTFT0009 | Road Works | 2027-07-18 → 2027-06-22 (-26d) | 2027-07-26 → 2027-06-30 (-26d) |  | 6.13d → 28.19d |
| TACOFTFT0012 | CCTV Networks | 2027-09-06 → 2027-09-13 (+7d) | 2027-09-14 → 2027-09-21 (+7d) |  | -18.55d → -24.55d |
| 3 | **Final Test & commisionning Zone 3** | 2027-03-03 → 2027-02-15 (-16d) | 2027-09-25 → 2027-10-02 (+7d) |  |  |
| TACOFTFT0023 | Sewerage Networks | 2027-03-03 → 2027-02-15 (-16d) | 2027-03-09 → 2027-02-21 (-16d) |  | 127.36d → 141.38d |
| TACOFTFT0022 | TSE Networks | 2027-06-20 → 2027-06-07 (-13d) | 2027-06-23 → 2027-06-10 (-13d) |  | 62.55d → 73.43d |
| TACOFTFT0021 | Potable Water Networks | 2027-06-12 → 2027-06-15 (+3d) | 2027-06-17 → 2027-06-21 (+4d) |  | 67.04d → 64.66d |
| TACOFTFT0024 | Storm Water Drainage Networks | 2027-07-29 → 2027-07-24 (-5d) | 2027-08-07 → 2027-08-01 (-6d) |  | 12.79d → 17.92d |
| TACOFTFT0017 | Road Works | 2027-07-29 → 2027-08-01 (+3d) | 2027-08-02 → 2027-08-04 (+2d) |  | 3.16d → 1.39d |
| TACOFTFT0019 | Telecommunications Networks | 2027-08-28 → 2027-08-11 (-17d) | 2027-09-04 → 2027-08-19 (-16d) |  | -23.61d → -9.61d |
| TACOFTFT0020 | CCTV Networks | 2027-09-14 → 2027-09-21 (+7d) | 2027-09-25 → 2027-10-02 (+7d) |  | -18.55d → -24.55d |
| 2 | **AS BUILT DRAWINGS** | 2027-03-03 → 2027-02-24 (-7d) |  |  |  |
| 1 | **AS BUILT DRAWINGS Zone 1** | 2027-03-09 → 2027-03-02 (-7d) |  |  |  |
| TACOFTAD0007 | Sewerage Networks | 2027-03-09 → 2027-03-02 (-7d) | 2027-03-21 → 2027-03-14 (-7d) |  | 127.36d → 133.58d |
| TACOFTAD0006 | TSE Networks | 2027-06-13 → 2027-05-31 (-13d) | 2027-06-24 → 2027-06-12 (-12d) |  | 45.42d → 56.3d |
| TACOFTAD0005 | Potable Water Networks | 2027-05-31 → 2027-06-03 (+3d) | 2027-06-12 → 2027-06-15 (+3d) |  | 56.04d → 53.66d |
| TACOFTAD0008 | Storm Water Drainage Networks | 2027-07-18 → 2027-07-12 (-6d) | 2027-07-29 → 2027-07-24 (-5d) |  | 15.79d → 20.92d |
| TACOFTAD0001 | Road Works | 2027-08-02 → 2027-08-04 (+2d) | 2027-08-05 → 2027-08-08 (+3d) |  | 3.16d → 1.39d |
| TACOFTAD0003 | Telecommunications Networks | 2027-09-04 → 2027-08-19 (-16d) | 2027-09-12 → 2027-08-28 (-15d) |  | -23.61d → -9.61d |
| TACOFTAD0004 | CCTV Networks | 2027-09-05 → 2027-09-12 (+7d) | 2027-09-09 → 2027-09-16 (+7d) |  | -21.55d → -27.55d |
| 2 | **AS BUILT DRAWINGS Zone 2** | 2027-03-03 → 2027-02-24 (-7d) |  |  |  |
| TACOFTAD0015 | Sewerage Networks | 2027-03-03 → 2027-02-24 (-7d) | 2027-03-21 → 2027-03-14 (-7d) |  | 127.36d → 133.58d |
| TACOFTAD0014 | TSE Networks | 2027-06-13 → 2027-05-31 (-13d) | 2027-06-24 → 2027-06-12 (-12d) |  | 45.42d → 56.3d |
| TACOFTAD0013 | Potable Water Networks | 2027-05-31 → 2027-06-03 (+3d) | 2027-06-12 → 2027-06-15 (+3d) |  | 56.04d → 53.66d |
| TACOFTAD0016 | Storm Water Drainage Networks | 2027-07-12 → 2027-07-06 (-6d) | 2027-07-29 → 2027-07-24 (-5d) |  | 15.79d → 20.92d |
| TACOFTAD0009 | Road Works | 2027-08-05 → 2027-08-08 (+3d) | 2027-08-09 → 2027-08-11 (+2d) |  | 3.16d → 1.39d |
| TACOFTAD0011 | Telecommunications Networks | 2027-09-04 → 2027-08-19 (-16d) | 2027-09-12 → 2027-08-28 (-15d) |  | -23.61d → -9.61d |
| TACOFTAD0012 | CCTV Networks | 2027-09-05 → 2027-09-12 (+7d) | 2027-09-09 → 2027-09-16 (+7d) |  | -21.55d → -27.55d |
| 3 | **AS BUILT DRAWINGS Zone 3** | 2027-03-09 → 2027-03-02 (-7d) |  |  |  |
| TACOFTAD0023 | Sewerage Networks | 2027-03-09 → 2027-03-02 (-7d) | 2027-03-21 → 2027-03-14 (-7d) |  | 127.36d → 133.58d |
| TACOFTAD0022 | TSE Networks | 2027-06-13 → 2027-05-31 (-13d) | 2027-06-24 → 2027-06-12 (-12d) |  | 45.42d → 56.3d |
| TACOFTAD0021 | Potable Water Networks | 2027-05-31 → 2027-06-03 (+3d) | 2027-06-12 → 2027-06-15 (+3d) |  | 56.04d → 53.66d |
| TACOFTAD0024 | Storm Water Drainage Networks | 2027-07-18 → 2027-07-12 (-6d) | 2027-07-29 → 2027-07-24 (-5d) |  | 15.79d → 20.92d |
| TACOFTAD0017 | Road Works | 2027-08-09 → 2027-08-11 (+2d) | 2027-08-12 → 2027-08-15 (+3d) |  | 3.16d → 1.39d |
| TACOFTAD0019 | Telecommunications Networks | 2027-09-04 → 2027-08-19 (-16d) | 2027-09-12 → 2027-08-28 (-15d) |  | -23.61d → -9.61d |
| TACOFTAD0020 | CCTV Networks | 2027-09-04 → 2027-09-11 (+7d) | 2027-09-09 → 2027-09-16 (+7d) |  | -21.55d → -27.55d |

## Version 7 (data date 2026-11-09, saved 2026-11-10, file 9-11-2026.xer)

Last finish 2027-10-06 → 2027-10-10 (+4d). Complete tasks 639 → 658.

Changed:

| ID | Task | Start | Finish | Complete | Total float |
| --- | --- | --- | --- | --- | --- |
| GENERAL | **MILESTONS** |  | 2027-10-06 → 2027-10-10 (+4d) |  |  |
| 2 | **CONTRACTUAL MILESTONES** |  | 2027-10-06 → 2027-10-10 (+4d) |  |  |
| TAGNCM0003 | Project finish | 2027-10-06 → 2027-10-10 (+4d) | 2027-10-06 → 2027-10-10 (+4d) |  | -28.35d → -31.75d |
| 1 | **NET WORK MILESTONES** |  | 2027-10-03 → 2027-10-06 (+3d) |  |  |
| TAGNML0008 | Start CCTV Works | 2026-11-02 → 2026-11-09 (+7d) | 2026-11-02 → 2026-11-09 (+7d) |  | -20d → -26d |
| TAGNML0019 | Finish Sewerage Networks | 2027-03-14 → 2027-03-11 (-3d) | 2027-03-14 → 2027-03-11 (-3d) |  | 149.58d → 151.82d |
| TAGNML0017 | Finish Potable Water Networks | 2027-06-21 → 2027-06-09 (-12d) | 2027-06-21 → 2027-06-09 (-12d) |  | 64.66d → 74.7d |
| TAGNML0020 | Finish Storm Water Drainage Networks | 2027-07-24 → 2027-07-19 (-5d) | 2027-07-24 → 2027-07-19 (-5d) |  | 36.92d → 40.02d |
| TAGNML0015 | Finish Teleommunications Works | 2027-08-28 → 2027-09-03 (+6d) | 2027-08-28 → 2027-09-03 (+6d) |  | 6.39d → 0.39d |
| TAGNML0013 | Finish Road Works | 2027-09-30 → 2027-09-29 (-1d) | 2027-09-30 → 2027-09-29 (-1d) |  | -23.35d → -22.25d |
| TAGNML0014 | Finish Electrical Works | 2027-10-03 → 2027-10-02 (-1d) | 2027-10-03 → 2027-10-02 (-1d) |  | -25.86d → -24.76d |
| TAGNML0016 | Finish CCTV Works | 2027-10-02 → 2027-10-06 (+4d) | 2027-10-02 → 2027-10-06 (+4d) |  | -24.55d → -28.75d |
| TAGNZM0004 | Finish Zone 1 | 2027-06-02 → 2027-06-01 (-1d) | 2027-06-02 → 2027-06-01 (-1d) |  | 80.32d → 81.92d |
| TAGNZM0006 | Finish Zone 3 | 2027-06-15 → 2027-06-03 (-12d) | 2027-06-15 → 2027-06-03 (-12d) |  | 69.66d → 79.7d |
| 3 | **PRELIMINARY SUBMITTALS** |  | 2026-12-01 → 2026-12-08 (+7d) |  |  |
| TAGNPS0002 | Shop drawing complete |  | 2026-12-01 → 2026-12-08 (+7d) |  | 3.6d → -2.4d |
| 5 | **MOBILIZATION** |  | 2027-08-24 → 2027-08-23 (-1d) |  |  |
| 2 | **Site Facilites and Offices** |  | 2027-08-24 → 2027-08-23 (-1d) |  |  |
| TAGNMZ9 | Office Operation part 01 |  | 2027-08-24 → 2027-08-23 (-1d) | 34% → 36% | -0.01d → 0d |
| 17 | **PROCUREMENT** |  | 2027-09-30 → 2027-09-29 (-1d) |  |  |
| 17 | **Material Fabrication and Delivery** |  | 2027-09-30 → 2027-09-29 (-1d) |  |  |
| 1 | **Material Fabrication and Delivery for Road Works** |  | 2027-09-30 → 2027-09-29 (-1d) |  |  |
| TAPQDVRD00011 | ABC Delivery to Site Part 01 |  | 2026-12-08 → 2026-12-07 (-1d) | 55% → 65% | -28.35d → -27.25d |
| TAPQDVRD00041 | Precast Concrete Curbstone Delivery to Site part 01 |  | 2027-07-25 → 2027-07-24 (-1d) |  | -23.35d → -22.25d |
| TAPQDVRD0005 | Precast Concrete Interlocking Delivery to Site | 2027-08-16 → 2027-08-15 (-1d) | 2027-09-30 → 2027-09-29 (-1d) |  | -23.35d → -22.25d |
| TAPQDVEL0002 | cables (LV,MV )Delivery to Site) |  | 2027-01-13 → 2027-01-20 (+7d) |  | -9.47d → -8.87d |
| TAPQDVEL00011 | Pipes ,Fittings Delivery to Site Part 01 |  | 2026-11-04 → 2026-11-11 (+7d) |  | -27.55d → -31.75d |
| TAPQDVEL0003 | Poles & Luminares Delivery to Site |  |  | 30% → 41% | -9.47d → -8.87d |
| TAPQDVEL0005 | Pre cast Drawpits and Pole Foundation Delivery |  |  | 5% → 11% | -9.47d → -8.87d |
| 11 | **Material Fabrication and Delivery for Telecommunication** |  | 2026-11-10 → 2026-11-15 (+5d) |  |  |
| TAPQDVTC0001 | Telecommunication Material (Pipes,,ets) Delivery |  | 2026-11-10 → 2026-11-15 (+5d) | 92% → 95% | -27.55d → -31.75d |
| 12 | **Material Fabrication and Delivery for CCTV Networks** |  | 2026-11-21 → 2026-11-25 (+4d) |  |  |
| TAPQDVCC0001 | CCTV Material Cabls,Camera,Devices,ets) Delivery |  | 2026-11-21 → 2026-11-25 (+4d) |  | -27.55d → -31.75d |
| 15 | **Material Fabrication and Delivery for Sewerage Networks** |  | 2026-12-12 → 2026-12-19 (+7d) |  |  |
| TAPQDVSW00021 | Fiberglass Manholes,ets) Delivery Part 01 | 2026-11-02 → 2026-11-09 (+7d) | 2026-12-12 → 2026-12-19 (+7d) |  | 18.2d → 14.45d |
| 16 | **Material Fabrication and Delivery for Storm Networks** |  | 2026-11-22 → 2026-11-29 (+7d) |  |  |
| TAPQDVST0009 | Catchbasin Delivery to Site |  | 2026-11-14 → 2026-11-21 (+7d) |  | 44.55d → 40.8d |
| TAPQDVST00071 | RIprab,Sand,Marl gravel Delivery for Ponds part 01 |  | 2026-11-11 → 2026-11-18 (+7d) |  | 206.4d → 200.4d |
| TAPQDVST00061 | Manholes,ets Delivery part 01 |  | 2026-11-22 → 2026-11-29 (+7d) |  | 35.56d → 31.81d |
| 1 | **CONSTRUCTION WORKS** |  | 2027-10-03 → 2027-10-02 (-1d) |  |  |
| 9 | **ZONE 1** |  | 2027-10-03 → 2027-10-02 (-1d) |  |  |
| 1 | **Collector Road 02** |  | 2027-06-02 → 2027-06-01 (-1d) |  |  |
| 10 | **Road Works** |  | 2027-06-02 → 2027-06-01 (-1d) |  |  |
| TAEXRDCC020004 | ABC aggregate Base Course Works |  | 2027-04-13 → 2027-04-12 (-1d) | 70% → 85% | 28.19d → 28.91d |
| TAEXRDCC020005 | MBC1 layer |  |  | 38% → 50% | 28.19d → 28.91d |
| TAEXRDCC020006 | BBC Base Course |  | 2027-04-17 → 2027-04-15 (-2d) |  | 28.19d → 28.91d |
| TAEXRDCC0200021 | Backfilling Works for Road Part 01 |  | 2027-04-01 → 2027-04-04 (+3d) |  | 28.19d → 28.91d |
| TAEXRDCC0200031 | Subgrade Works Part 01 |  | 2027-04-07 → 2027-04-10 (+3d) |  | 28.19d → 28.91d |
| TAEXRDCC020008 | Precast Concret Kerps |  | 2027-04-28 → 2027-04-27 (-1d) | 7% → 15% | 37.32d → 38.92d |
| TAEXRDCC020007 | BWC Asphalt Wearing Course with RC | 2027-04-28 → 2027-04-27 (-1d) | 2027-05-01 → 2027-04-29 (-2d) |  | 41.32d → 42.92d |
| TAEXRDCC020009 | Precast Interlock Works | 2027-05-01 → 2027-04-29 (-2d) | 2027-05-22 → 2027-05-20 (-2d) |  | 41.32d → 42.92d |
| TAEXRDCC020010 | Stone Paving works | 2027-05-22 → 2027-05-20 (-2d) | 2027-05-30 → 2027-05-29 (-1d) |  | 41.32d → 42.92d |
| TAEXRDCC020011 | Road Marking | 2027-05-30 → 2027-05-29 (-1d) | 2027-06-01 → 2027-05-31 (-1d) |  | 41.32d → 42.92d |
| TAEXRDCC020012 | Traffic Sinage | 2027-06-01 → 2027-05-31 (-1d) | 2027-06-02 → 2027-06-01 (-1d) |  | 41.32d → 42.92d |
| TAEXELCC020001 | Trench Cut off | 2026-12-20 → 2026-12-19 (-1d) | 2027-01-12 → 2027-01-11 (-1d) |  | 63.19d → 66.81d |
| TAEXELCC020004 | Trench Backfilling | 2027-02-22 → 2027-02-24 (+2d) | 2027-03-15 → 2027-03-17 (+2d) |  | 28.19d → 28.91d |
| TAEXELCC020005 | Cables Pulling | 2027-03-15 → 2027-03-17 (+2d) | 2027-03-24 → 2027-03-27 (+3d) |  | 28.19d → 28.91d |
| TAEXTCCC020001 | Trench Cut off | 2026-11-04 → 2026-11-11 (+7d) | 2026-11-28 → 2026-12-05 (+7d) |  | -9.61d → -15.61d |
| 13 | **CCTV Works** | 2027-03-11 → 2027-03-16 (+5d) | 2027-05-20 → 2027-05-25 (+5d) |  |  |
| TAEXCCCC020001 | Pipe Installation with manhole | 2027-03-11 → 2027-03-16 (+5d) | 2027-03-23 → 2027-03-28 (+5d) |  | -27.55d → -31.75d |
| TAEXCCCC020002 | CCTV Swiches Lighting panels Installation | 2027-03-23 → 2027-03-28 (+5d) | 2027-04-13 → 2027-04-18 (+5d) |  | -27.55d → -31.75d |
| TAEXCCCC020003 | Cable laying and connected with Panels | 2027-04-13 → 2027-04-18 (+5d) | 2027-04-29 → 2027-05-04 (+5d) |  | 71.45d → 67.25d |
| TAEXCCCC020004 | Pole Installation with IP Outdoor CCTV POE Camera | 2027-04-29 → 2027-05-04 (+5d) | 2027-05-20 → 2027-05-25 (+5d) |  | 71.45d → 67.25d |
| 2 | **Collector Road 03** |  | 2027-05-20 → 2027-05-23 (+3d) |  |  |
| 10 | **Road Works** |  | 2027-05-13 → 2027-05-12 (-1d) |  |  |
| TAEXRDCC030007 | BWC Asphalt Wearing Course with RC | 2027-04-28 → 2027-04-27 (-1d) | 2027-05-01 → 2027-04-29 (-2d) |  | 50.32d → 51.92d |
| TAEXRDCC030009 | Precast Interlock Works | 2027-05-01 → 2027-04-29 (-2d) | 2027-05-08 → 2027-05-06 (-2d) |  | 58.32d → 59.92d |
| TAEXRDCC030010 | Stone Paving works | 2027-05-08 → 2027-05-06 (-2d) | 2027-05-10 → 2027-05-09 (-1d) |  | 58.32d → 59.92d |
| TAEXRDCC030011 | Road Marking | 2027-05-10 → 2027-05-09 (-1d) | 2027-05-11 → 2027-05-10 (-1d) |  | 58.32d → 59.92d |
| TAEXRDCC030012 | Traffic Sinage | 2027-05-11 → 2027-05-10 (-1d) | 2027-05-13 → 2027-05-12 (-1d) |  | 58.32d → 59.92d |

| ID | Task | Start | Finish | Complete | Total float |
| --- | --- | --- | --- | --- | --- |
| 1 | **Electrical Works** |  | 2027-05-20 → 2027-05-19 (-1d) |  |  |
| TAEXELCC0300011 | Trench Cut off Part 01 | 2026-12-08 → 2026-12-07 (-1d) | 2026-12-20 → 2026-12-19 (-1d) |  | -28.35d → -27.25d |
| TAEXELCC030005 | Cables Pulling | 2027-04-28 → 2027-04-27 (-1d) | 2027-05-03 → 2027-05-02 (-1d) |  | 37.32d → 38.92d |
| TAEXELCC0300041 | Trench Backfilling Part 01 | 2027-05-03 → 2027-05-02 (-1d) | 2027-05-08 → 2027-05-06 (-2d) |  | 37.32d → 38.92d |
| TAEXELCC030006 | Poles RC Foundation | 2027-05-08 → 2027-05-06 (-2d) | 2027-05-11 → 2027-05-10 (-1d) |  | 37.32d → 38.92d |
| TAEXELCC030007 | Earthing cables | 2027-05-11 → 2027-05-10 (-1d) | 2027-05-13 → 2027-05-12 (-1d) |  | 37.32d → 38.92d |
| TAEXELCC030008 | Lighting Pole Installation with Luminares | 2027-05-11 → 2027-05-10 (-1d) | 2027-05-20 → 2027-05-19 (-1d) |  | 68.32d → 69.92d |
| 2 | **Telecommunication Works** | 2026-12-21 → 2026-12-28 (+7d) |  |  |  |
| TAEXTCCC030001 | Trench Cut off | 2026-12-21 → 2026-12-28 (+7d) | 2027-01-02 → 2027-01-09 (+7d) |  | -9.61d → -15.61d |
| 3 | **CCTV Works** | 2026-11-10 → 2026-11-15 (+5d) | 2027-05-18 → 2027-05-23 (+5d) |  |  |
| TAEXCCCC030001 | Pipe Installation with manhole | 2026-11-10 → 2026-11-15 (+5d) | 2026-11-18 → 2026-11-23 (+5d) |  | -27.55d → -31.75d |
| TAEXCCCC030002 | CCTV Swiches Lighting panels Installation | 2027-04-13 → 2027-04-18 (+5d) | 2027-04-27 → 2027-05-02 (+5d) |  | -27.55d → -31.75d |
| TAEXCCCC030003 | Cable laying and connected with Panels | 2027-04-27 → 2027-05-02 (+5d) | 2027-05-06 → 2027-05-11 (+5d) |  | 73.45d → 69.25d |
| TAEXCCCC030004 | Pole Installation with IP Outdoor CCTV POE Camera | 2027-05-06 → 2027-05-11 (+5d) | 2027-05-18 → 2027-05-23 (+5d) |  | 73.45d → 69.25d |
| 22 | **Road Works** | 2027-04-28 → 2027-04-27 (-1d) | 2027-05-29 → 2027-05-27 (-2d) |  |  |
| TAEXRDCU210002 | Precast Concret Kerps | 2027-04-28 → 2027-04-27 (-1d) | 2027-05-09 → 2027-05-08 (-1d) |  | 45.32d → 46.92d |
| TAEXRDCU210001 | BWC Asphalt Wearing Course with RC | 2027-05-09 → 2027-05-08 (-1d) | 2027-05-10 → 2027-05-09 (-1d) |  | 45.32d → 46.92d |
| TAEXRDCU210003 | Precast Interlock Works | 2027-05-10 → 2027-05-09 (-1d) | 2027-05-18 → 2027-05-17 (-1d) |  | 45.32d → 46.92d |
| TAEXRDCU210004 | Stone Paving works | 2027-05-18 → 2027-05-17 (-1d) | 2027-05-24 → 2027-05-23 (-1d) |  | 45.32d → 46.92d |
| TAEXRDCU210005 | Road Marking | 2027-05-24 → 2027-05-23 (-1d) | 2027-05-25 → 2027-05-24 (-1d) |  | 45.32d → 46.92d |
| TAEXRDCU210006 | Traffic Sinage | 2027-05-25 → 2027-05-24 (-1d) | 2027-05-29 → 2027-05-27 (-2d) |  | 45.32d → 46.92d |
| 13 | **Electrical Works** | 2026-12-20 → 2026-12-19 (-1d) |  |  |  |
| TAEXELCU210001 | Trench Cut off | 2026-12-20 → 2026-12-19 (-1d) | 2027-01-04 → 2027-01-03 (-1d) |  | -28.35d → -27.25d |
| 1 | **Telecommunication Works** | 2027-01-02 → 2027-01-09 (+7d) |  |  |  |
| TAEXTCCU210001 | Trench Cut off | 2027-01-02 → 2027-01-09 (+7d) | 2027-01-18 → 2027-01-25 (+7d) |  | -9.61d → -15.61d |
| 10 | **CCTV Works** | 2026-11-18 → 2026-11-23 (+5d) | 2027-06-15 → 2027-06-20 (+5d) |  |  |
| TAEXCCCU210001 | Pipe Installation with manhole | 2026-11-18 → 2026-11-23 (+5d) | 2026-12-05 → 2026-12-09 (+4d) |  | -27.55d → -31.75d |
| TAEXCCCU210002 | CCTV Swiches Lighting panels Installation | 2027-04-27 → 2027-05-02 (+5d) | 2027-05-16 → 2027-05-20 (+4d) |  | -27.55d → -31.75d |
| TAEXCCCU210003 | Cable laying and connected with Panels | 2027-05-16 → 2027-05-20 (+4d) | 2027-05-30 → 2027-06-03 (+4d) |  | 49.45d → 45.25d |
| TAEXCCCU210004 | Pole Installation with IP Outdoor CCTV POE Camera | 2027-05-30 → 2027-06-03 (+4d) | 2027-06-15 → 2027-06-20 (+5d) |  | 49.45d → 45.25d |
| TAEXPTCU210005 | Install Valves with fittings |  | 2027-03-11 → 2027-03-13 (+2d) |  | 100.8d → 100d |
| TAEXPTCU210002 | Bedding Works |  | 2027-01-16 → 2027-01-18 (+2d) | 75% → 87% | 127.55d → 128.79d |
| TAEXPTCU210003 | Install Pipes & Fittings |  |  | 75% → 87% | 113.05d → 114.05d |
| TAEXPTCU210006 | Install fire hydrent |  | 2027-03-18 → 2027-03-20 (+2d) | 20% → 30% | 100.8d → 100d |
| TAEXPTCU210004 | Backfilling Works for Trench | 2027-02-21 → 2027-02-22 (+1d) | 2027-03-11 → 2027-03-13 (+2d) |  | 100.8d → 100d |
| TAEXPTCU210008 | Inspection Test | 2027-04-04 → 2027-04-05 (+1d) |  |  | 100.8d → 100d |
| 3 | **TSE Networks** |  | 2027-03-14 → 2027-03-16 (+2d) |  |  |
| TAEXTSCU210005 | Install Valves with fittings |  | 2027-02-21 → 2027-02-22 (+1d) |  | 109.6d → 108d |
| TAEXTSCU210006 | Valve Chamber works |  | 2027-03-08 → 2027-03-10 (+2d) |  | 109.6d → 108d |
| TAEXTSCU210001 | Excavation works for Trench | 2026-12-10 → 2026-12-12 (+2d) | 2027-01-13 → 2027-01-14 (+1d) |  | 56.3d → 54.7d |
| TAEXTSCU210002 | Bedding Works | 2027-01-13 → 2027-01-14 (+1d) | 2027-01-16 → 2027-01-17 (+1d) |  | 100.8d → 100d |
| TAEXTSCU210003 | Install Pipes & Fittings | 2027-01-16 → 2027-01-17 (+1d) | 2027-02-02 → 2027-02-03 (+1d) |  | 100.8d → 100d |
| TAEXTSCU210004 | Backfilling Works for Trench | 2027-02-02 → 2027-02-03 (+1d) | 2027-02-21 → 2027-02-22 (+1d) |  | 100.8d → 100d |
| TAEXTSCU210007 | Inspection Test | 2027-03-08 → 2027-03-10 (+2d) | 2027-03-14 → 2027-03-16 (+2d) |  | 118.2d → 116.6d |
| 4 | **Sewerage Networks** |  | 2026-12-22 → 2026-12-23 (+1d) |  |  |
| TAEXSWCU210001 | Excavation works for Trench |  | 2026-11-16 → 2026-11-18 (+2d) | 87% → 95% | 141.38d → 139.3d |
| TAEXSWCU210002 | Bedding Works |  | 2026-11-17 → 2026-11-18 (+1d) | 85% → 95% | 195.88d → 195.8d |
| TAEXSWCU210003 | Install GRP Pipes & Fittings |  | 2026-11-18 → 2026-11-19 (+1d) | 85% → 95% | 195.88d → 195.8d |
| TAEXSWCU210005 | Manhole Installation with backfilling |  | 2026-12-20 → 2026-12-22 (+2d) | 55% → 85% | 193.85d → 192.95d |
| TAEXSWCU210004 | Backfilling Works for Trench |  | 2026-12-06 → 2026-12-07 (+1d) | 80% → 90% | 195.88d → 195.8d |
| TAEXSWCU210006 | Leakage Test |  | 2026-12-22 → 2026-12-23 (+1d) | 65% → 80% | 193.85d → 192.95d |
| 5 | **Storm Networks** |  | 2027-01-23 → 2027-01-30 (+7d) |  |  |
| TAEXSTCU210007 | Leakage Test |  | 2027-01-23 → 2027-01-30 (+7d) |  | 155.6d → 149.6d |
| TAEXSTCU2100051 | Manhole Installation with backfilling Part 01 |  | 2026-12-03 → 2026-12-10 (+7d) |  | 46.7d → 42.95d |
| TAEXSTCU2100031 | Install GRP Pipes & Fittings Part 01 |  | 2026-11-04 → 2026-11-11 (+7d) |  | 46.7d → 42.95d |
| TAEXSTCU2100041 | Backfilling Works for Trench Part 01 |  | 2026-11-22 → 2026-11-29 (+7d) |  | 46.7d → 42.95d |
| TAEXSTCU2100021 | Bedding Works Part 01 | 2026-11-02 → 2026-11-09 (+7d) | 2026-11-02 → 2026-11-09 (+7d) |  | 46.7d → 42.95d |
| TAEXSTCU210006 | Install Catch Basin with UPVC Pipes & Fittings | 2027-01-06 → 2027-01-13 (+7d) | 2027-01-21 → 2027-01-28 (+7d) |  | 18.2d → 14.45d |
| 6 | **Upgrade local 26** |  | 2027-10-03 → 2027-10-02 (-1d) |  |  |
| 14 | **Electrical Works** |  | 2027-10-03 → 2027-10-02 (-1d) |  |  |
| TAEXELCU260001 | Trench Cut off |  | 2027-01-13 → 2027-01-12 (-1d) |  | -28.35d → -27.25d |
| TAEXELCU260005 | Cables Pulling |  | 2027-04-20 → 2027-04-19 (-1d) | 39% → 55% | 113.68d → 114.92d |
| TAEXELCU260006 | Poles RC Foundation | 2027-04-07 → 2026-11-07 A (-151d) | 2027-04-14 → 2027-04-13 (-1d) | 0% → 8% | 91.05d → 92.13d |
| TAEXELCU260008 | Lighting Pole Installation with Luminares | 2027-04-14 → 2027-04-13 (-1d) | 2027-04-24 → 2027-04-22 (-2d) |  | 91.05d → 92.13d |
| TAEXELCU260007 | Earthing cables | 2027-09-28 → 2027-09-27 (-1d) | 2027-10-03 → 2027-10-02 (-1d) |  | -25.86d → -24.76d |
| 10 | **CCTV Works** | 2026-12-05 → 2026-12-09 (+4d) | 2027-06-20 → 2027-06-24 (+4d) |  |  |
| TAEXCCCU260001 | Pipe Installation with manhole | 2026-12-05 → 2026-12-09 (+4d) | 2026-12-16 → 2026-12-21 (+5d) |  | -27.55d → -31.75d |
| TAEXCCCU260002 | CCTV Swiches Lighting panels Installation | 2027-05-16 → 2027-05-20 (+4d) | 2027-05-30 → 2027-06-03 (+4d) |  | -27.55d → -31.75d |
| TAEXCCCU260003 | Cable laying and connected with Panels | 2027-05-30 → 2027-06-03 (+4d) | 2027-06-08 → 2027-06-13 (+5d) |  | 45.45d → 41.25d |
| TAEXCCCU260004 | Pole Installation with IP Outdoor CCTV POE Camera | 2027-06-08 → 2027-06-13 (+5d) | 2027-06-20 → 2027-06-24 (+4d) |  | 45.45d → 41.25d |

| ID | Task | Start | Finish | Complete | Total float |
| --- | --- | --- | --- | --- | --- |
| 3 | **Local Road 10** |  | 2027-06-28 → 2027-07-03 (+5d) |  |  |
| 12 | **Road Works** |  | 2027-05-22 → 2027-05-19 (-3d) |  |  |
| TAEXRDCL100003 | Subgrade Works | 2026-12-08 → 2026-11-08 A (-30d) | 2026-12-13 → 2026-12-10 (-3d) | 0% → 25% | 52.25d → 56.6d |
| TAEXRDCL100004 | ABC aggregate Base Course Works | 2027-01-23 → 2027-01-30 (+7d) | 2027-01-26 → 2027-02-02 (+7d) |  | 18.2d → 14.45d |
| TAEXRDCL100005 | MBC1 layer | 2027-01-27 → 2027-02-03 (+7d) | 2027-01-27 → 2027-02-03 (+7d) |  | 18.2d → 14.45d |
| TAEXRDCL100006 | BBC Base Course | 2027-01-28 → 2027-02-04 (+7d) | 2027-01-30 → 2027-02-06 (+7d) |  | 18.2d → 14.45d |
| TAEXRDCL100008 | Precast Concret Kerps | 2027-01-31 → 2027-02-07 (+7d) | 2027-02-15 → 2027-02-22 (+7d) |  | 18.2d → 14.45d |
| TAEXRDCL100007 | BWC Asphalt Wearing Course with RC | 2027-05-01 → 2027-04-28 (-3d) | 2027-05-02 → 2027-04-29 (-3d) |  | 51.39d → 53.14d |
| TAEXRDCL100009 | Precast Interlock Works | 2027-05-02 → 2027-04-29 (-3d) | 2027-05-17 → 2027-05-15 (-2d) |  | 51.39d → 53.14d |
| TAEXRDCL100010 | Stone Paving works | 2027-05-17 → 2027-05-15 (-2d) | 2027-05-19 → 2027-05-17 (-2d) |  | 51.39d → 53.14d |
| TAEXRDCL100011 | Road Marking | 2027-05-19 → 2027-05-17 (-2d) | 2027-05-20 → 2027-05-18 (-2d) |  | 51.39d → 53.14d |
| TAEXRDCL100012 | Traffic Sinage | 2027-05-20 → 2027-05-18 (-2d) | 2027-05-22 → 2027-05-19 (-3d) |  | 51.39d → 53.14d |
| TAEXELCL100001 | Trench Cut off | 2027-01-13 → 2027-01-12 (-1d) | 2027-01-27 → 2027-01-26 (-1d) |  | -28.35d → -27.25d |
| 14 | **Telecommunication Works** | 2027-01-25 → 2027-02-01 (+7d) |  |  |  |
| TAEXTCCL100001 | Trench Cut off | 2027-01-25 → 2027-02-01 (+7d) | 2027-01-31 → 2027-02-07 (+7d) |  | -9.61d → -15.61d |
| 10 | **CCTV Works** | 2026-12-16 → 2026-12-21 (+5d) | 2027-06-28 → 2027-07-03 (+5d) |  |  |
| TAEXCCCL100001 | Pipe Installation with manhole | 2026-12-16 → 2026-12-21 (+5d) | 2026-12-26 → 2026-12-30 (+4d) |  | -27.55d → -31.75d |
| TAEXCCCL100002 | CCTV Swiches Lighting panels Installation | 2027-05-30 → 2027-06-03 (+4d) | 2027-06-10 → 2027-06-15 (+5d) |  | -27.55d → -31.75d |
| TAEXCCCL100003 | Cable laying and connected with Panels | 2027-06-10 → 2027-06-15 (+5d) | 2027-06-17 → 2027-06-22 (+5d) |  | 38.45d → 34.25d |
| TAEXCCCL100004 | Pole Installation with IP Outdoor CCTV POE Camera | 2027-06-17 → 2027-06-22 (+5d) | 2027-06-28 → 2027-07-03 (+5d) |  | 38.45d → 34.25d |
| 10 | **ZONE 2** |  | 2027-09-12 → 2027-09-16 (+4d) |  |  |
| 1 | **Collector Road 01** |  | 2027-08-02 → 2027-08-07 (+5d) |  |  |
| 13 | **Road Works** |  | 2027-05-04 → 2027-05-05 (+1d) |  |  |
| TAEXRDCC0100011 | Road Excavation and Disposal Part 01 | 2027-01-16 → 2027-01-17 (+1d) | 2027-01-19 → 2027-01-20 (+1d) |  | 1.39d → 3.14d |
| TAEXRDCC0100021 | Backfilling Works for Road Part 01 | 2027-01-19 → 2027-01-20 (+1d) | 2027-01-23 → 2027-01-24 (+1d) |  | 1.39d → 3.14d |
| TAEXRDCC0100031 | Subgrade Works Part 01 | 2027-01-23 → 2027-01-24 (+1d) | 2027-02-07 → 2027-02-08 (+1d) |  | 1.39d → 3.14d |
| TAEXRDCC010004 | ABC aggregate Base Course Works | 2027-02-07 → 2027-02-08 (+1d) | 2027-02-28 → 2027-03-01 (+1d) |  | 1.39d → 3.14d |
| TAEXRDCC010005 | MBC1 layer | 2027-02-28 → 2027-03-01 (+1d) | 2027-03-02 → 2027-03-03 (+1d) |  | 1.39d → 3.14d |
| TAEXRDCC010006 | BBC Base Course | 2027-03-02 → 2027-03-03 (+1d) | 2027-03-07 → 2027-03-08 (+1d) |  | 1.39d → 3.14d |
| TAEXRDCC010008 | Precast Concret Kerps | 2027-03-07 → 2027-03-08 (+1d) | 2027-03-28 → 2027-03-29 (+1d) |  | 1.39d → 3.14d |
| TAEXRDCC010007 | BWC Asphalt Wearing Course with RC | 2027-03-28 → 2027-03-29 (+1d) | 2027-03-30 → 2027-03-31 (+1d) |  | 70.19d → 69.69d |
| TAEXRDCC010009 | Precast Interlock Works | 2027-03-30 → 2027-03-31 (+1d) | 2027-04-18 → 2027-04-19 (+1d) |  | 70.19d → 69.69d |
| TAEXRDCC010010 | Stone Paving works | 2027-04-18 → 2027-04-19 (+1d) | 2027-04-28 → 2027-04-29 (+1d) |  | 70.19d → 69.69d |
| TAEXRDCC010011 | Road Marking | 2027-04-28 → 2027-04-29 (+1d) | 2027-05-01 → 2027-05-02 (+1d) |  | 70.19d → 69.69d |
| TAEXRDCC010012 | Traffic Sinage | 2027-05-01 → 2027-05-02 (+1d) | 2027-05-04 → 2027-05-05 (+1d) |  | 70.19d → 69.69d |
| TAEXELCC010001 | Trench Cut off | 2027-01-27 → 2027-01-26 (-1d) | 2027-02-11 → 2027-02-10 (-1d) |  | -28.35d → -27.25d |
| 1 | **Telecommunication Works** |  | 2027-06-05 → 2027-06-03 (-2d) |  |  |
| TAEXTCCC010003 | Road Crossing Ducts |  | 2027-05-18 → 2027-05-17 (-1d) |  | 41.45d → 42.05d |
| TAEXTCCC010001 | Trench Cut off | 2027-01-31 → 2027-02-07 (+7d) | 2027-02-27 → 2027-03-06 (+7d) |  | -9.61d → -15.61d |
| TAEXTCCC010004 | Trench Backfilling | 2027-05-18 → 2027-05-17 (-1d) | 2027-06-05 → 2027-06-03 (-2d) |  | 41.45d → 42.05d |
| 2 | **CCTV Works** | 2026-12-26 → 2026-12-30 (+4d) | 2027-08-02 → 2027-08-07 (+5d) |  |  |
| TAEXCCCC010001 | Pipe Installation with manhole | 2026-12-26 → 2026-12-30 (+4d) | 2027-01-09 → 2027-01-13 (+4d) |  | -27.55d → -31.75d |
| TAEXCCCC010002 | CCTV Swiches Lighting panels Installation | 2027-06-10 → 2027-06-15 (+5d) | 2027-06-29 → 2027-07-04 (+5d) |  | -27.55d → -31.75d |
| TAEXCCCC010003 | Cable laying and connected with Panels | 2027-06-29 → 2027-07-04 (+5d) | 2027-07-13 → 2027-07-18 (+5d) |  | 8.45d → 4.25d |
| TAEXCCCC010004 | Pole Installation with IP Outdoor CCTV POE Camera | 2027-07-13 → 2027-07-18 (+5d) | 2027-08-02 → 2027-08-07 (+5d) |  | 8.45d → 4.25d |
| 3 | **Potable Networks** |  | 2027-03-27 → 2027-03-22 (-5d) |  |  |
| TAEXPTCC010002 | Bedding Works |  | 2026-11-19 → 2026-11-22 (+3d) |  | 1.39d → 3.14d |
| TAEXPTCC010003 | Install Pipes & Fittings |  | 2026-12-02 → 2026-12-03 (+1d) |  | 1.39d → 3.14d |
| TAEXPTCC010004 | Backfilling Works for Trench |  | 2026-12-15 → 2026-12-17 (+2d) |  | 1.39d → 3.14d |
| TAEXPTCC010007 | Valve Chamber works |  | 2027-03-22 → 2027-03-17 (-5d) | 15% → 25% | 108.58d → 112.82d |
| TAEXPTCC010005 | Install Valves with fittings |  | 2027-02-20 → 2027-02-18 (-2d) |  | 110.55d → 115.79d |
| TAEXPTCC0100011 | Excavation works for Trench Part 01 | 2026-11-07 → 2026-11-09 (+2d) | 2026-11-18 → 2026-11-21 (+3d) |  | 1.39d → 3.14d |
| TAEXPTCC010008 | Inspection Test | 2027-03-22 → 2027-03-17 (-5d) | 2027-03-27 → 2027-03-22 (-5d) |  | 108.58d → 112.82d |
| 4 | **TSE Networks** |  | 2027-03-31 → 2027-03-27 (-4d) |  |  |
| TAEXTSCC010001 | Excavation works for Trench |  | 2026-11-09 → 2026-11-08 A (-1d) | 90% → 100% | 26.35d → none |
| TAEXTSCC010005 | Install Valves with fittings |  | 2027-01-03 → 2027-01-05 (+2d) |  | 1.39d → 3.14d |
| TAEXTSCC010006 | Valve Chamber works |  | 2027-01-16 → 2027-01-17 (+1d) | 15% → 25% | 1.39d → 3.14d |
| TAEXTSCC010003 | Install Pipes & Fittings |  | 2026-12-08 → 2026-12-06 (-2d) | 60% → 85% | 7.47d → 12.72d |
| TAEXTSCC010002 | Bedding Works |  | 2026-11-21 → 2026-11-22 (+1d) | 60% → 90% | 16.89d → 22.74d |
| TAEXTSCC010004 | Backfilling Works for Trench | 2026-12-15 → 2026-12-17 (+2d) | 2027-01-03 → 2027-01-05 (+2d) |  | 1.39d → 3.14d |
| TAEXTSCC010007 | Inspection Test | 2027-03-27 → 2027-03-22 (-5d) | 2027-03-31 → 2027-03-27 (-4d) |  | 108.58d → 112.82d |
| 5 | **Sewerage Networks** |  | 2026-12-15 → 2026-12-22 (+7d) |  |  |
| TAEXSWCC010005 | Manhole Installation with backfilling |  | 2026-12-14 → 2026-12-21 (+7d) |  | 188.85d → 182.85d |
| TAEXSWCC0100031 | Install GRP Pipes & Fittings Part 01 |  | 2026-11-02 → 2026-11-08 A (+6d) | 95% → 100% | 196.4d → none |
| TAEXSWCC010006 | Leakage Test |  | 2026-12-15 → 2026-12-22 (+7d) |  | 188.85d → 182.85d |
| TAEXSWCC0100041 | Backfilling Works for Trench Part 01 |  | 2026-11-23 → 2026-11-28 (+5d) | 55% → 75% | 196.4d → 193d |
| 6 | **Storm Networks** |  | 2026-12-19 → 2026-12-23 (+4d) |  |  |
| TAEXSTCC0100051 | Manhole Installation with backfilling Part 01 |  | 2026-11-24 → 2026-12-01 (+7d) |  | 57.76d → 59.11d |
| TAEXSTCC0100091 | Install Box Culvert Part 2 Part 01 |  | 2026-11-24 → 2026-12-01 (+7d) | 95% → 98% | 57.76d → 59.11d |
| TAEXSTCC010006 | Install Catch Basin with UPVC Pipes & Fittings |  | 2026-12-03 → 2026-12-05 (+2d) | 35% → 75% | 57.76d → 59.11d |

| ID | Task | Start | Finish | Complete | Total float |
| --- | --- | --- | --- | --- | --- |
| TAEXSTCC0100041 | Backfilling Works for Trench & Box Culvert Part 01 | 2026-11-02 → 2026-11-08 A (+6d) | 2026-11-10 → 2026-11-14 (+4d) | 0% → 45% | 68.9d → 73.85d |
| TAEXSTCC010007 | Leakage Test | 2026-12-15 → 2026-11-08 A (-37d) | 2026-12-19 → 2026-12-23 (+4d) | 0% → 45% | 196.85d → 192.2d |
| 11 | **Upgrade Local 28** |  | 2027-08-10 → 2027-08-15 (+5d) |  |  |
| 24 | **Road Works** | 2027-03-28 → 2027-03-29 (+1d) | 2027-05-26 → 2027-05-27 (+1d) |  |  |
| TAEXRDCU280002 | Precast Concret Kerps | 2027-03-28 → 2027-03-29 (+1d) | 2027-04-14 → 2027-04-15 (+1d) |  | 1.39d → 3.14d |
| TAEXRDCU280001 | BWC Asphalt Wearing Course with RC | 2027-05-02 → 2027-05-03 (+1d) | 2027-05-03 → 2027-05-04 (+1d) |  | 51.19d → 50.69d |
| TAEXRDCU280003 | Precast Interlock Works | 2027-05-03 → 2027-05-04 (+1d) | 2027-05-18 → 2027-05-19 (+1d) |  | 51.19d → 50.69d |
| TAEXRDCU280004 | Stone Paving works | 2027-05-18 → 2027-05-19 (+1d) | 2027-05-23 → 2027-05-24 (+1d) |  | 51.19d → 50.69d |
| TAEXRDCU280005 | Road Marking | 2027-05-23 → 2027-05-24 (+1d) | 2027-05-24 → 2027-05-25 (+1d) |  | 51.19d → 50.69d |
| TAEXRDCU280006 | Traffic Sinage | 2027-05-24 → 2027-05-25 (+1d) | 2027-05-26 → 2027-05-27 (+1d) |  | 51.19d → 50.69d |
| TAEXELCU280001 | Trench Cut off |  | 2027-02-18 → 2027-02-17 (-1d) |  | -28.35d → -27.25d |
| TAEXELCU280005 | Cables Pulling |  | 2027-05-18 → 2027-05-17 (-1d) |  | 41.73d → 42.33d |
| 1 | **Telecommunication Works** | 2027-02-27 → 2027-03-06 (+7d) |  |  |  |
| TAEXTCCU280001 | Trench Cut off | 2027-02-27 → 2027-03-06 (+7d) | 2027-03-10 → 2027-03-17 (+7d) |  | -9.61d → -15.61d |
| 2 | **CCTV Works** | 2027-01-09 → 2027-01-13 (+4d) | 2027-08-10 → 2027-08-15 (+5d) |  |  |
| TAEXCCCU280001 | Pipe Installation with manhole | 2027-01-09 → 2027-01-13 (+4d) | 2027-01-23 → 2027-01-27 (+4d) |  | -27.55d → -31.75d |
| TAEXCCCU280002 | CCTV Swiches Lighting panels Installation | 2027-06-29 → 2027-07-04 (+5d) | 2027-07-15 → 2027-07-20 (+5d) |  | -27.55d → -31.75d |
| TAEXCCCU280003 | Cable laying and connected with Panels | 2027-07-15 → 2027-07-20 (+5d) | 2027-07-27 → 2027-08-01 (+5d) |  | 1.45d → -2.75d |
| TAEXCCCU280004 | Pole Installation with IP Outdoor CCTV POE Camera | 2027-07-27 → 2027-08-01 (+5d) | 2027-08-10 → 2027-08-15 (+5d) |  | 1.45d → -2.75d |
| 3 | **Potable Networks** |  | 2027-03-20 → 2027-03-17 (-3d) |  |  |
| TAEXPTCU280007 | Valve Chamber works | 2027-03-02 → 2027-02-28 (-2d) | 2027-03-20 → 2027-03-17 (-3d) |  | 114.43d → 116.82d |
| 4 | **TSE Networks** |  | 2027-03-24 → 2027-03-22 (-2d) |  |  |
| TAEXTSCU280005 | Install Valves with fittings |  | 2027-01-07 → 2027-01-09 (+2d) |  | 162.9d → 161.45d |
| TAEXTSCU280006 | Valve Chamber works |  | 2027-01-21 → 2027-01-24 (+3d) |  | 162.9d → 161.45d |
| TAEXTSCU280001 | Excavation works for Trench | 2026-11-15 → 2026-11-16 (+1d) | 2026-12-10 → 2026-12-12 (+2d) |  | 56.3d → 54.7d |
| TAEXTSCU280002 | Bedding Works | 2026-12-10 → 2026-12-12 (+2d) | 2026-12-13 → 2026-12-14 (+1d) |  | 162.9d → 161.45d |
| TAEXTSCU280003 | Install Pipes & Fittings | 2026-12-13 → 2026-12-14 (+1d) | 2026-12-22 → 2026-12-23 (+1d) |  | 162.9d → 161.45d |
| TAEXTSCU280004 | Backfilling Works for Trench | 2026-12-22 → 2026-12-23 (+1d) | 2027-01-07 → 2027-01-09 (+2d) |  | 162.9d → 161.45d |
| TAEXTSCU280007 | Inspection Test | 2027-03-20 → 2027-03-17 (-3d) | 2027-03-24 → 2027-03-22 (-2d) |  | 114.43d → 116.82d |
| 19 | **Storm Networks** |  | 2027-03-24 → 2027-01-02 (-81d) |  |  |
| TAEXSTCU280007 | Leakage Test |  | 2027-03-24 → 2026-11-08 A (-136d) | 95% → 100% | 114.43d → none |
| TAEXSTCU280006 | Install Catch Basin with UPVC Pipes & Fittings | 2026-12-13 → 2026-12-20 (+7d) | 2026-12-26 → 2027-01-02 (+7d) |  | 18.2d → 14.45d |
| 5 | **Local Road 02** |  | 2027-08-29 → 2027-09-02 (+4d) |  |  |
| TAEXRDC L020007 | BWC Asphalt Wearing Course with RC | 2027-05-01 → 2027-04-29 (-2d) | 2027-05-02 → 2027-05-01 (-1d) |  | 50.32d → 51.92d |
| TAEXRDC L020009 | Precast Interlock Works | 2027-05-02 → 2027-05-01 (-1d) | 2027-05-12 → 2027-05-11 (-1d) |  | 54.32d → 55.92d |
| TAEXRDC L020010 | Stone Paving works | 2027-05-12 → 2027-05-11 (-1d) | 2027-05-17 → 2027-05-16 (-1d) |  | 54.32d → 55.92d |
| TAEXELCL020001 | Trench Cut off |  | 2027-02-24 → 2027-02-23 (-1d) |  | -28.35d → -27.25d |
| TAEXELCL020004 | Trench Backfilling |  | 2027-04-14 → 2027-04-13 (-1d) |  | 74.65d → 75.25d |
| TAEXTCCL020001 | Trench Cut off |  | 2027-03-17 → 2027-03-24 (+7d) |  | -9.61d → -15.61d |
| 3 | **CCTV Works** | 2027-01-23 → 2027-01-27 (+4d) | 2027-08-29 → 2027-09-02 (+4d) |  |  |
| TAEXCCCL020001 | Pipe Installation with manhole | 2027-01-23 → 2027-01-27 (+4d) | 2027-02-03 → 2027-02-08 (+5d) |  | -27.55d → -31.75d |
| TAEXCCCL020002 | CCTV Swiches Lighting panels Installation | 2027-07-15 → 2027-07-20 (+5d) | 2027-07-31 → 2027-08-04 (+4d) |  | -27.55d → -31.75d |
| TAEXCCCL020003 | Cable laying and connected with Panels | 2027-07-31 → 2027-08-04 (+4d) | 2027-08-11 → 2027-08-16 (+5d) |  | -14.55d → -18.75d |
| TAEXCCCL020004 | Pole Installation with IP Outdoor CCTV POE Camera | 2027-08-11 → 2027-08-16 (+5d) | 2027-08-29 → 2027-09-02 (+4d) |  | -14.55d → -18.75d |
| 7 | **Local Road 03** |  | 2027-09-11 → 2027-09-15 (+4d) |  |  |
| 2 | **Road Works** |  | 2027-05-11 → 2027-05-09 (-2d) |  |  |
| TAEXRDCL0300021 | Backfilling Works for Road Part 01 |  | 2026-11-24 → 2026-12-01 (+7d) |  | 64.76d → 62.01d |
| TAEXRDCL030008 | Precast Concret Kerps |  | 2027-04-24 → 2027-04-21 (-3d) | 70% → 95% | 1.39d → 3.14d |
| TAEXRDCL030007 | BWC Asphalt Wearing Course with RC | 2027-04-24 → 2027-04-21 (-3d) | 2027-04-25 → 2027-04-22 (-3d) |  | 64.99d → 66.74d |
| TAEXRDCL030009 | Precast Interlock Works | 2027-04-25 → 2027-04-22 (-3d) | 2027-05-04 → 2027-05-02 (-2d) |  | 64.99d → 66.74d |
| TAEXRDCL030010 | Stone Paving works | 2027-05-04 → 2027-05-02 (-2d) | 2027-05-08 → 2027-05-05 (-3d) |  | 64.99d → 66.74d |
| TAEXRDCL030011 | Road Marking | 2027-05-08 → 2027-05-05 (-3d) | 2027-05-09 → 2027-05-06 (-3d) |  | 64.99d → 66.74d |
| TAEXRDCL030012 | Traffic Sinage | 2027-05-09 → 2027-05-06 (-3d) | 2027-05-11 → 2027-05-09 (-2d) |  | 64.99d → 66.74d |
| TAEXELCL030003 | Road Crossing Ducts |  | 2027-04-11 → 2027-04-10 (-1d) |  | 72.4d → 73d |
| TAEXELCL030001 | Trench Cut off |  | 2027-03-03 → 2027-03-02 (-1d) |  | -28.35d → -27.25d |
| TAEXELCL030005 | Cables Pulling |  | 2027-04-19 → 2027-04-18 (-1d) |  | 72.4d → 73d |
| TAEXELCL030004 | Trench Backfilling |  | 2027-04-17 → 2027-04-15 (-2d) |  | 72.4d → 73d |
| TAEXTCCL030002 | Drawpit and PVC Pipes Installation |  | 2027-05-27 → 2027-05-26 (-1d) |  | -9.47d → -8.87d |
| TAEXTCCL030001 | Trench Cut off | 2027-03-17 → 2027-03-24 (+7d) | 2027-03-25 → 2027-04-01 (+7d) |  | -9.61d → -15.61d |
| 4 | **CCTV Works** | 2027-02-03 → 2027-02-08 (+5d) | 2027-09-11 → 2027-09-15 (+4d) |  |  |
| TAEXCCCL030001 | Pipe Installation with manhole | 2027-02-03 → 2027-02-08 (+5d) | 2027-02-16 → 2027-02-21 (+5d) |  | -27.55d → -31.75d |
| TAEXCCCL030002 | CCTV Swiches Lighting panels Installation | 2027-07-31 → 2027-08-04 (+4d) | 2027-08-15 → 2027-08-19 (+4d) |  | -27.55d → -31.75d |
| TAEXCCCL030003 | Cable laying and connected with Panels | 2027-08-15 → 2027-08-19 (+4d) | 2027-08-26 → 2027-08-31 (+5d) |  | -26.55d → -30.75d |
| TAEXCCCL030004 | Pole Installation with IP Outdoor CCTV POE Camera | 2027-08-26 → 2027-08-31 (+5d) | 2027-09-11 → 2027-09-15 (+4d) |  | -26.55d → -30.75d |
| 9 | **Local Road 04** |  | 2027-09-07 → 2027-09-12 (+5d) |  |  |
| 2 | **Road Works** |  | 2027-06-12 → 2027-06-09 (-3d) |  |  |
| TAEXRDCL040007 | BWC Asphalt Wearing Course with RC | 2027-04-24 → 2027-04-21 (-3d) | 2027-05-17 → 2027-05-15 (-2d) |  | 37.99d → 39.74d |
| TAEXRDCL040009 | Precast Interlock Works | 2027-05-17 → 2027-05-15 (-2d) | 2027-05-31 → 2027-05-29 (-2d) |  | 37.99d → 39.74d |
| TAEXRDCL040010 | Stone Paving works | 2027-05-31 → 2027-05-29 (-2d) | 2027-06-08 → 2027-06-06 (-2d) |  | 37.99d → 39.74d |
| TAEXRDCL040011 | Road Marking | 2027-06-08 → 2027-06-06 (-2d) | 2027-06-09 → 2027-06-07 (-2d) |  | 37.99d → 39.74d |

| ID | Task | Start | Finish | Complete | Total float |
| --- | --- | --- | --- | --- | --- |
| TAEXRDCL040012 | Traffic Sinage | 2027-06-09 → 2027-06-07 (-2d) | 2027-06-12 → 2027-06-09 (-3d) |  | 37.99d → 39.74d |
| TAEXELCL040001 | Trench Cut off |  | 2027-03-15 → 2027-03-14 (-1d) |  | -28.35d → -27.25d |
| TAEXELCL040006 | Poles RC Foundation |  | 2027-04-10 → 2027-04-08 (-2d) |  | 82.55d → 83.15d |
| TAEXELCL040008 | Lighting Pole Installation with Luminares | 2027-04-10 → 2027-04-08 (-2d) | 2027-04-15 → 2027-04-14 (-1d) |  | 85.55d → 86.15d |
| 3 | **Telecommunication Works** |  | 2027-06-08 → 2027-06-07 (-1d) |  |  |
| TAEXTCCL040001 | Trench Cut off |  | 2027-04-01 → 2027-04-08 (+7d) |  | -9.61d → -15.61d |
| TAEXTCCL040004 | Trench Backfilling | 2027-05-27 → 2027-05-26 (-1d) | 2027-06-08 → 2027-06-07 (-1d) |  | 38.73d → 39.33d |
| 4 | **CCTV Works** | 2027-02-16 → 2027-02-21 (+5d) | 2027-09-07 → 2027-09-12 (+5d) |  |  |
| TAEXCCCL040001 | Pipe Installation with manhole | 2027-02-16 → 2027-02-21 (+5d) | 2027-02-28 → 2027-03-04 (+4d) |  | -27.55d → -31.75d |
| TAEXCCCL040002 | CCTV Swiches Lighting panels Installation | 2027-07-31 → 2027-08-04 (+4d) | 2027-08-11 → 2027-08-16 (+5d) |  | -27.55d → -31.75d |
| TAEXCCCL040003 | Cable laying and connected with Panels | 2027-08-11 → 2027-08-16 (+5d) | 2027-08-23 → 2027-08-28 (+5d) |  | -23.55d → -27.75d |
| TAEXCCCL040004 | Pole Installation with IP Outdoor CCTV POE Camera | 2027-08-23 → 2027-08-28 (+5d) | 2027-09-07 → 2027-09-12 (+5d) |  | -23.55d → -27.75d |
| 2 | **Local Road 05** |  | 2027-09-12 → 2027-09-16 (+4d) |  |  |
| 3 | **Road Works** |  | 2027-05-27 → 2027-05-26 (-1d) |  |  |
| TAEXRDCL050008 | Precast Concret Kerps |  | 2026-12-09 → 2026-11-08 A (-31d) | 99% → 100% | 147.65d → none |
| TAEXRDCL050007 | BWC Asphalt Wearing Course with RC | 2027-05-02 → 2027-05-01 (-1d) | 2027-05-03 → 2027-05-02 (-1d) |  | 50.32d → 51.92d |
| TAEXRDCL050009 | Precast Interlock Works | 2027-05-03 → 2027-05-02 (-1d) | 2027-05-20 → 2027-05-19 (-1d) |  | 50.32d → 51.92d |
| TAEXRDCL050010 | Stone Paving works | 2027-05-20 → 2027-05-19 (-1d) | 2027-05-24 → 2027-05-23 (-1d) |  | 50.32d → 51.92d |
| TAEXRDCL050011 | Road Marking | 2027-05-24 → 2027-05-23 (-1d) | 2027-05-25 → 2027-05-24 (-1d) |  | 50.32d → 51.92d |
| TAEXRDCL050012 | Traffic Sinage | 2027-05-25 → 2027-05-24 (-1d) | 2027-05-27 → 2027-05-26 (-1d) |  | 50.32d → 51.92d |
| TAEXELCL050001 | Trench Cut off |  | 2027-03-24 → 2027-03-23 (-1d) |  | -28.35d → -27.25d |
| TAEXELCL050005 | Cables Pulling | 2027-04-19 → 2026-11-07 A (-163d) |  | 0% → 5% | 73.05d → 73.8d |
| 2 | **Telecommunication Works** |  | 2027-06-08 → 2027-06-07 (-1d) |  |  |
| TAEXTCCL050001 | Trench Cut off |  | 2027-04-10 → 2027-04-17 (+7d) |  | -9.61d → -15.61d |
| TAEXTCCL050004 | Trench Backfilling | 2027-05-27 → 2027-05-26 (-1d) | 2027-06-08 → 2027-06-07 (-1d) |  | 31.73d → 32.33d |
| 4 | **CCTV Works** | 2027-02-28 → 2027-03-04 (+4d) | 2027-09-12 → 2027-09-16 (+4d) |  |  |
| TAEXCCCL050001 | Pipe Installation with manhole | 2027-02-28 → 2027-03-04 (+4d) | 2027-03-11 → 2027-03-16 (+5d) |  | -27.55d → -31.75d |
| TAEXCCCL050002 | CCTV Swiches Lighting panels Installation | 2027-08-11 → 2027-08-16 (+5d) | 2027-08-23 → 2027-08-28 (+5d) |  | -27.55d → -31.75d |
| TAEXCCCL050003 | Cable laying and connected with Panels | 2027-08-23 → 2027-08-28 (+5d) | 2027-09-03 → 2027-09-07 (+4d) |  | -27.55d → -31.75d |
| TAEXCCCL050004 | Pole Installation with IP Outdoor CCTV POE Camera | 2027-09-03 → 2027-09-07 (+4d) | 2027-09-12 → 2027-09-16 (+4d) |  | -27.55d → -31.75d |
| 11 | **ZONE 3** |  | 2027-09-28 → 2027-09-27 (-1d) |  |  |
| 1 | **Local Road 01** |  | 2027-08-03 → 2027-08-01 (-2d) |  |  |
| 12 | **Road Works** |  | 2027-06-16 → 2027-06-14 (-2d) |  |  |
| TAEXRDCL010004 | ABC aggregate Base Course Works |  | 2027-01-28 → 2027-02-03 (+6d) |  | 73.64d → 68.24d |
| TAEXRDCL010005 | MBC1 layer |  | 2027-01-28 → 2027-02-03 (+6d) |  | 73.64d → 68.24d |
| TAEXRDCL010006 | BBC Base Course |  | 2027-01-28 → 2027-02-04 (+7d) |  | 73.64d → 68.24d |
| TAEXRDCL010008 | Precast Concret Kerps |  | 2027-04-29 → 2027-04-27 (-2d) |  | 1.39d → 3.14d |
| TAEXRDCL010007 | BWC Asphalt Wearing Course with RC | 2027-04-29 → 2027-04-27 (-2d) | 2027-05-01 → 2027-04-28 (-3d) |  | 40.39d → 42.14d |
| TAEXRDCL010009 | Precast Interlock Works | 2027-05-22 → 2027-05-19 (-3d) | 2027-06-08 → 2027-06-06 (-2d) |  | 40.39d → 42.14d |
| TAEXRDCL010010 | Stone Paving works | 2027-06-08 → 2027-06-06 (-2d) | 2027-06-13 → 2027-06-10 (-3d) |  | 40.39d → 42.14d |
| TAEXRDCL010011 | Road Marking | 2027-06-13 → 2027-06-10 (-3d) | 2027-06-14 → 2027-06-12 (-2d) |  | 40.39d → 42.14d |
| TAEXRDCL010012 | Traffic Sinage | 2027-06-14 → 2027-06-12 (-2d) | 2027-06-16 → 2027-06-14 (-2d) |  | 40.39d → 42.14d |
| 1 | **Electrical Works** |  | 2027-08-03 → 2027-08-01 (-2d) |  |  |
| TAEXELCL010002 | Road Crossing Ducts |  | 2027-05-25 → 2027-05-23 (-2d) |  | -10.04d → -8.94d |
| TAEXELCL010003 | Drawpit and PVC Pipes Installation |  | 2027-05-22 → 2027-05-20 (-2d) |  | -10.04d → -8.94d |
| TAEXELCL010001 | Trench Cut off | 2027-05-03 → 2027-05-02 (-1d) | 2027-05-17 → 2027-05-16 (-1d) |  | -28.35d → -27.25d |
| TAEXELCL010006 | Poles RC Foundation | 2027-05-22 → 2027-05-20 (-2d) | 2027-05-25 → 2027-05-24 (-1d) |  | 47.24d → 48.34d |
| TAEXELCL010004 | Trench Backfilling | 2027-05-25 → 2027-05-23 (-2d) | 2027-06-06 → 2027-06-03 (-3d) |  | -10.04d → -8.94d |
| TAEXELCL010008 | Lighting Pole Installation with Luminares | 2027-05-25 → 2027-05-24 (-1d) | 2027-05-31 → 2027-05-30 (-1d) |  | 53.24d → 54.34d |
| TAEXELCL010005 | Cables Pulling | 2027-07-28 → 2027-07-26 (-2d) | 2027-08-01 → 2027-07-29 (-3d) |  | -10.04d → -8.94d |
| TAEXELCL010007 | Earthing cables | 2027-08-01 → 2027-07-29 (-3d) | 2027-08-03 → 2027-08-01 (-2d) |  | -10.04d → -8.94d |
| 2 | **Telecommunication Works** |  | 2027-06-14 → 2027-06-13 (-1d) |  |  |
| TAEXTCCL010002 | Drawpit and PVC Pipes Installation |  | 2027-05-31 → 2027-05-30 (-1d) |  | -9.47d → -8.87d |
| TAEXTCCL010003 | Road Crossing Ducts |  | 2027-06-02 → 2027-06-01 (-1d) |  | 40.93d → 41.53d |
| TAEXTCCL010001 | Trench Cut off | 2027-05-03 → 2027-05-10 (+7d) | 2027-05-11 → 2027-05-18 (+7d) |  | -9.61d → -15.61d |
| TAEXTCCL010004 | Trench Backfilling | 2027-06-02 → 2027-06-01 (-1d) | 2027-06-14 → 2027-06-13 (-1d) |  | 40.93d → 41.53d |
| 16 | **CCTV Works** | 2027-05-08 → 2027-05-12 (+4d) | 2027-07-05 → 2027-07-10 (+5d) |  |  |
| TAEXCCCL010001 | Pipe Installation with manhole | 2027-05-08 → 2027-05-12 (+4d) | 2027-05-22 → 2027-05-26 (+4d) |  | -26.55d → -30.75d |
| TAEXCCCL010002 | CCTV Swiches Lighting panels Installation | 2027-05-22 → 2027-05-26 (+4d) | 2027-06-06 → 2027-06-10 (+4d) |  | 32.45d → 28.25d |
| TAEXCCCL010003 | Cable laying and connected with Panels | 2027-06-06 → 2027-06-10 (+4d) | 2027-06-17 → 2027-06-22 (+5d) |  | 32.45d → 28.25d |
| TAEXCCCL010004 | Pole Installation with IP Outdoor CCTV POE Camera | 2027-06-17 → 2027-06-22 (+5d) | 2027-07-05 → 2027-07-10 (+5d) |  | 32.45d → 28.25d |
| 17 | **Potable Networks** |  | 2027-03-30 → 2027-03-31 (+1d) |  |  |
| TAEXPTCL010002 | Bedding Works |  | 2026-11-07 → 2026-11-14 (+7d) | 90% → 95% | 70.73d → 73.38d |
| TAEXPTCL010003 | Install Pipes & Fittings |  | 2027-01-26 → 2027-01-25 (-1d) | 90% → 95% | 80.08d → 92.72d |
| TAEXPTCL0100011 | Excavation works for Trench Part 01 |  | 2026-11-02 → 2026-11-09 (+7d) | 90% → 95% | 1.39d → 3.14d |
| TAEXPTCL010007 | Valve Chamber works |  | 2027-03-27 → 2027-03-28 (+1d) |  | 53.66d → 63.7d |
| TAEXPTCL010008 | Inspection Test |  | 2027-03-30 → 2027-03-31 (+1d) |  | 109.06d → 108.7d |
| 3 | **TSE Networks** |  | 2027-05-01 → 2027-05-02 (+1d) |  |  |
| TAEXTSCL010002 | Bedding Works |  | 2026-11-07 → 2026-11-14 (+7d) |  | 70.73d → 73.38d |
| TAEXTSCL010003 | Install Pipes & Fittings |  | 2027-04-21 → 2027-04-24 (+3d) |  |  |

| ID | Task | Start | Finish | Complete | Total float |
| --- | --- | --- | --- | --- | --- |
| TAEXTSCL010004 | Backfilling Works for Trench |  | 2027-04-27 → 2027-04-28 (+1d) |  |  |
| TAEXTSCL0100011 | Excavation works for Trench Part 01 |  | 2026-11-05 → 2026-11-12 (+7d) |  | 26.35d → 30.8d |
| TAEXTSCL010006 | Valve Chamber works |  | 2027-04-28 → 2027-05-01 (+3d) |  | 92.83d → 91.23d |
| TAEXTSCL010005 | Install Valves with fittings |  | 2027-04-27 → 2027-04-28 (+1d) |  |  |
| TAEXTSCL010007 | Inspection Test |  | 2027-05-01 → 2027-05-02 (+1d) |  | 92.83d → 91.23d |
| 13 | **Sewerage Networks** |  | 2026-12-27 → 2026-12-30 (+3d) |  |  |
| TAEXSWCL0100011 | Excavation works for Trench Part 01 |  | 2026-11-12 → 2026-11-17 (+5d) | 5% → 25% | 141.38d → 139.3d |
| TAEXSWCL0100021 | Bedding Works Part 01 |  | 2026-11-15 → 2026-11-18 (+3d) | 5% → 25% | 184.6d → 183d |
| TAEXSWCL0100031 | Install GRP Pipes & Fittings Part 01 |  | 2026-11-25 → 2026-11-28 (+3d) | 5% → 25% | 184.6d → 183d |
| TAEXSWCL0100051 | Manhole Installation with backfilling Part 01 |  | 2026-12-24 → 2026-12-29 (+5d) |  | 184.6d → 181d |
| TAEXSWCL0100041 | Backfilling Works for Trench Part 01 |  | 2026-12-13 → 2026-12-15 (+2d) | 5% → 25% | 184.6d → 183d |
| TAEXSWCL010006 | Leakage Test |  | 2026-12-27 → 2026-12-30 (+3d) |  | 184.6d → 181d |
| 4 | **Storm Networks** |  | 2026-12-06 → 2026-12-13 (+7d) |  |  |
| TAEXSTCL0100051 | Manhole Installation with backfilling Part 01 |  | 2026-11-23 → 2026-11-30 (+7d) |  | 73.64d → 68.24d |
| TAEXSTCL0100011 | Excavation works for Trench & Box Culvert Part 01 |  | 2026-11-05 → 2026-11-10 (+5d) | 85% → 95% | 24.04d → 24.78d |
| TAEXSTCL010006 | Install Catch Basin with UPVC Pipes & Fittings |  | 2026-11-29 → 2026-12-06 (+7d) |  | 73.64d → 68.24d |
| TAEXSTCL0100041 | Backfilling Works for Trench and Boxculvert Part 01 |  | 2026-11-08 → 2026-11-15 (+7d) |  | 85.28d → 79.88d |
| TAEXSTCL0100021 | Bedding Works Part 01 |  | 2026-11-08 → 2026-11-14 (+6d) | 85% → 95% | 70.73d → 73.38d |
| TAEXSTCL0100031 | Install GRP Pipes & Fittings Part 01 |  | 2026-11-09 → 2026-11-15 (+6d) | 85% → 95% | 70.73d → 73.38d |
| TAEXSTCL010007 | Leakage Test |  | 2026-12-06 → 2026-12-13 (+7d) | 65% → 85% | 73.64d → 68.24d |
| 5 | **Local Road 06** |  | 2027-08-19 → 2027-08-18 (-1d) |  |  |
| 12 | **Road Works** |  | 2027-06-26 → 2027-06-23 (-3d) |  |  |
| TAEXRDCL0600031 | Subgrade Works Part 01 | 2027-02-10 → 2027-02-17 (+7d) | 2027-02-15 → 2027-02-22 (+7d) |  | 49.4d → 43.4d |
| TAEXRDCL060004 | ABC aggregate Base Course Works | 2027-02-15 → 2027-02-22 (+7d) | 2027-02-24 → 2027-03-03 (+7d) |  | 49.4d → 43.4d |
| TAEXRDCL060005 | MBC1 layer | 2027-02-24 → 2027-03-03 (+7d) | 2027-02-25 → 2027-03-04 (+7d) |  | 49.4d → 43.4d |
| TAEXRDCL060006 | BBC Base Course | 2027-02-25 → 2027-03-04 (+7d) | 2027-03-04 → 2027-03-11 (+7d) |  | 49.4d → 43.4d |
| TAEXRDCL060008 | Precast Concret Kerps | 2027-04-29 → 2027-04-27 (-2d) | 2027-05-20 → 2027-05-18 (-2d) |  | 1.39d → 3.14d |
| TAEXRDCL060007 | BWC Asphalt Wearing Course with RC | 2027-05-20 → 2027-05-18 (-2d) | 2027-05-23 → 2027-05-20 (-3d) |  | 32.39d → 34.14d |
| TAEXRDCL060009 | Precast Interlock Works | 2027-05-23 → 2027-05-20 (-3d) | 2027-06-08 → 2027-06-06 (-2d) |  | 32.39d → 34.14d |
| TAEXRDCL060010 | Stone Paving works | 2027-06-08 → 2027-06-06 (-2d) | 2027-06-22 → 2027-06-20 (-2d) |  | 32.39d → 34.14d |
| TAEXRDCL060011 | Road Marking | 2027-06-22 → 2027-06-20 (-2d) | 2027-06-23 → 2027-06-21 (-2d) |  | 32.39d → 34.14d |
| TAEXRDCL060012 | Traffic Sinage | 2027-06-23 → 2027-06-21 (-2d) | 2027-06-26 → 2027-06-23 (-3d) |  | 32.39d → 34.14d |
| 1 | **Electrical Works** | 2027-05-17 → 2027-05-16 (-1d) | 2027-08-19 → 2027-08-18 (-1d) |  |  |
| TAEXELCL060001 | Trench Cut off | 2027-05-17 → 2027-05-16 (-1d) | 2027-05-29 → 2027-05-27 (-2d) |  | -28.35d → -27.25d |
| TAEXELCL060002 | Drawpit and PVC Pipes Installation | 2027-05-29 → 2027-05-27 (-2d) | 2027-06-03 → 2027-06-02 (-1d) |  | -22.2d → -21.1d |
| TAEXELCL060003 | Road Crossing Ducts | 2027-06-03 → 2027-06-02 (-1d) | 2027-06-06 → 2027-06-05 (-1d) |  | -22.2d → -21.1d |
| TAEXELCL060006 | Poles RC Foundation | 2027-06-03 → 2027-06-02 (-1d) | 2027-06-08 → 2027-06-07 (-1d) |  | 37.8d → 38.9d |
| TAEXELCL060004 | Trench Backfilling | 2027-06-06 → 2027-06-05 (-1d) | 2027-06-22 → 2027-06-21 (-1d) |  | -22.2d → -21.1d |
| TAEXELCL060008 | Lighting Pole Installation with Luminares | 2027-06-08 → 2027-06-07 (-1d) | 2027-06-15 → 2027-06-14 (-1d) |  | 40.8d → 41.9d |
| TAEXELCL060005 | Cables Pulling | 2027-08-14 → 2027-08-12 (-2d) | 2027-08-17 → 2027-08-16 (-1d) |  | -22.2d → -21.1d |
| TAEXELCL060007 | Earthing cables | 2027-08-17 → 2027-08-16 (-1d) | 2027-08-19 → 2027-08-18 (-1d) |  | -22.2d → -21.1d |
| 2 | **Telecommunication Works** | 2027-05-11 → 2027-05-18 (+7d) | 2027-06-24 → 2027-06-23 (-1d) |  |  |
| TAEXTCCL060001 | Trench Cut off | 2027-05-11 → 2027-05-18 (+7d) | 2027-05-23 → 2027-05-30 (+7d) |  | -9.61d → -15.61d |
| TAEXTCCL060002 | Drawpit and PVC Pipes Installation | 2027-05-31 → 2027-05-30 (-1d) | 2027-06-06 → 2027-06-05 (-1d) |  | -9.47d → -8.87d |
| TAEXTCCL060003 | Road Crossing Ducts | 2027-06-06 → 2027-06-05 (-1d) | 2027-06-08 → 2027-06-07 (-1d) |  | 31.53d → 32.13d |
| TAEXTCCL060004 | Trench Backfilling | 2027-06-08 → 2027-06-07 (-1d) | 2027-06-24 → 2027-06-23 (-1d) |  | 31.53d → 32.13d |
| 17 | **CCTV Works** | 2027-05-22 → 2027-05-26 (+4d) | 2027-07-19 → 2027-07-24 (+5d) |  |  |
| TAEXCCCL060001 | Pipe Installation with manhole | 2027-05-22 → 2027-05-26 (+4d) | 2027-06-05 → 2027-06-09 (+4d) |  | -26.55d → -30.75d |
| TAEXCCCL060002 | CCTV Swiches Lighting panels Installation | 2027-06-05 → 2027-06-09 (+4d) | 2027-06-20 → 2027-06-24 (+4d) |  | 20.45d → 16.25d |
| TAEXCCCL060003 | Cable laying and connected with Panels | 2027-06-20 → 2027-06-24 (+4d) | 2027-07-01 → 2027-07-06 (+5d) |  | 20.45d → 16.25d |
| TAEXCCCL060004 | Pole Installation with IP Outdoor CCTV POE Camera | 2027-07-01 → 2027-07-06 (+5d) | 2027-07-19 → 2027-07-24 (+5d) |  | 20.45d → 16.25d |
| 16 | **Potable Networks** |  | 2027-04-15 → 2027-03-30 (-16d) |  |  |
| TAEXPTCL060001 | Excavation works for Trench |  | 2026-11-18 → 2026-11-07 A (-11d) | 97% → 100% | 53.66d → none |
| TAEXPTCL060003 | Install Pipes & Fittings |  | 2027-01-26 → 2026-11-08 A (-79d) | 95% → 100% | 80.08d → none |
| TAEXPTCL060002 | Bedding Works |  | 2026-11-18 → 2026-11-07 A (-11d) | 95% → 100% | 88.88d → none |
| TAEXPTCL060007 | Valve Chamber works |  | 2027-04-11 → 2027-03-30 (-12d) | 20% → 85% | 53.66d → 63.7d |
| TAEXPTCL060004 | Backfilling Works for Trench |  | 2027-01-27 → 2027-01-26 (-1d) |  | 133.81d → 136.25d |
| TAEXPTCL060005 | Install Valves with fittings |  | 2027-02-23 → 2027-02-20 (-3d) | 20% → 90% | 110.55d → 115.79d |
| TAEXPTCL060006 | Install fire hydrent |  | 2027-02-24 → 2027-02-22 (-2d) | 60% → 90% | 80.08d → 92.72d |
| TAEXPTCL060008 | Inspection Test | 2027-04-11 → 2026-11-08 A (-154d) | 2027-04-15 → 2026-11-08 A (-158d) | 0% → 100% | 95.46d → none |
| TAEXTSCL060001 | Excavation works for Trench |  | 2026-11-10 → 2026-11-08 A (-2d) | 80% → 100% | 56.3d → none |
| TAEXTSCL060003 | Install Pipes & Fittings |  | 2027-04-25 → 2026-11-08 A (-168d) | 69% → 100% | 61.54d → none |
| TAEXTSCL060002 | Bedding Works |  | 2026-11-11 → 2026-11-08 A (-3d) | 69% → 100% | 94.9d → none |
| TAEXTSCL060004 | Backfilling Works for Trench |  | 2027-04-29 → 2027-04-28 (-1d) |  | 61.54d → 62.42d |
| TAEXTSCL060006 | Valve Chamber works |  |  | 10% → 50% |  |
| TAEXTSCL060005 | Install Valves with fittings |  |  | 10% → 50% |  |
| 14 | **Sewerage Networks** |  | 2027-02-13 → 2027-02-18 (+5d) |  |  |
| TAEXSWCL060006 | Leakage Test |  | 2027-02-13 → 2027-02-18 (+5d) | 45% → 55% | 143.75d → 138.05d |
| TAEXSWCL0600031 | Install GRP Pipes & Fittings Part 01 |  | 2026-11-03 → 2026-11-10 (+7d) |  | 214.1d → 208.4d |
| TAEXSWCL0600051 | Manhole Installation with backfilling Part 01 |  | 2026-12-17 → 2026-12-24 (+7d) |  | 191.3d → 185.6d |

| ID | Task | Start | Finish | Complete | Total float |
| --- | --- | --- | --- | --- | --- |
| TAEXSWCL0600041 | Backfilling Works for Trench Part 01 | 2026-11-09 → 2026-11-16 (+7d) | 2026-11-21 → 2026-11-28 (+7d) |  | 214.1d → 208.4d |
| 4 | **Storm Networks** |  | 2027-02-10 → 2027-02-17 (+7d) |  |  |
| TAEXSTCL060001 | Excavation works for Trench |  | 2026-11-08 → 2026-11-11 (+3d) |  | 24.04d → 24.78d |
| TAEXSTCL060002 | Bedding Works |  | 2026-11-18 → 2026-11-21 (+3d) |  | 88.88d → 87.42d |
| TAEXSTCL060003 | Install GRP Pipes & Fittings |  | 2026-11-19 → 2026-11-21 (+2d) |  | 88.88d → 87.42d |
| TAEXSTCL060005 | Manhole Installation with backfilling |  | 2026-12-19 → 2026-12-20 (+1d) |  | 88.88d → 87.42d |
| TAEXSTCL060004 | Backfilling Works for Trench |  | 2026-12-07 → 2026-12-08 (+1d) |  | 88.88d → 87.42d |
| TAEXSTCL060007 | Leakage Test |  | 2027-02-10 → 2027-02-17 (+7d) |  | 49.4d → 43.4d |
| TAEXSTCL060006 | Install Catch Basin with UPVC Pipes & Fittings |  | 2027-02-09 → 2027-02-16 (+7d) |  | 49.4d → 43.4d |
| 2 | **Local Road 07** |  | 2027-08-22 → 2027-08-21 (-1d) |  |  |
| 12 | **Road Works** |  | 2027-07-31 → 2027-07-28 (-3d) |  |  |
| TAEXRDCL070004 | ABC aggregate Base Course Works | 2027-03-23 → 2027-03-30 (+7d) | 2027-03-27 → 2027-04-03 (+7d) |  | 43.14d → 37.14d |
| TAEXRDCL070005 | MBC1 layer | 2027-03-27 → 2027-04-03 (+7d) | 2027-03-28 → 2027-04-04 (+7d) |  | 43.14d → 37.14d |
| TAEXRDCL070006 | BBC Base Course | 2027-03-28 → 2027-04-04 (+7d) | 2027-03-30 → 2027-04-06 (+7d) |  | 43.14d → 37.14d |
| TAEXRDCL070008 | Precast Concret Kerps | 2027-05-20 → 2027-05-18 (-2d) | 2027-06-10 → 2027-06-08 (-2d) |  | 1.39d → 3.14d |
| TAEXRDCL070007 | BWC Asphalt Wearing Course with RC | 2027-06-10 → 2027-06-08 (-2d) | 2027-06-12 → 2027-06-09 (-3d) |  | 2.39d → 4.14d |
| TAEXRDCL070009 | Precast Interlock Works | 2027-06-21 → 2027-06-19 (-2d) | 2027-07-10 → 2027-07-07 (-3d) |  | 2.39d → 4.14d |
| TAEXRDCL070010 | Stone Paving works | 2027-07-10 → 2027-07-07 (-3d) | 2027-07-27 → 2027-07-25 (-2d) |  | 2.39d → 4.14d |
| TAEXRDCL070011 | Road Marking | 2027-07-27 → 2027-07-25 (-2d) | 2027-07-28 → 2027-07-26 (-2d) |  | 2.39d → 4.14d |
| TAEXRDCL070012 | Traffic Sinage | 2027-07-28 → 2027-07-26 (-2d) | 2027-07-31 → 2027-07-28 (-3d) |  | 2.39d → 4.14d |
| 1 | **Electrical Works** | 2027-05-29 → 2027-05-27 (-2d) | 2027-08-22 → 2027-08-21 (-1d) |  |  |
| TAEXELCL070001 | Trench Cut off | 2027-05-29 → 2027-05-27 (-2d) | 2027-06-12 → 2027-06-10 (-2d) |  | -28.35d → -27.25d |
| TAEXELCL070002 | Drawpit and PVC Pipes Installation | 2027-06-12 → 2027-06-10 (-2d) | 2027-06-21 → 2027-06-20 (-1d) |  | 13.8d → 14.9d |
| TAEXELCL070003 | Road Crossing Ducts | 2027-06-21 → 2027-06-20 (-1d) | 2027-06-23 → 2027-06-22 (-1d) |  | 13.8d → 14.9d |
| TAEXELCL070006 | Poles RC Foundation | 2027-06-21 → 2027-06-20 (-1d) | 2027-06-24 → 2027-06-23 (-1d) |  | 25.8d → 26.9d |
| TAEXELCL070004 | Trench Backfilling | 2027-06-23 → 2027-06-22 (-1d) | 2027-07-05 → 2027-07-04 (-1d) |  | 13.8d → 14.9d |
| TAEXELCL070008 | Lighting Pole Installation with Luminares | 2027-06-24 → 2027-06-23 (-1d) | 2027-06-30 → 2027-06-29 (-1d) |  | 27.8d → 28.9d |
| TAEXELCL070005 | Cables Pulling | 2027-07-05 → 2027-07-04 (-1d) | 2027-07-08 → 2027-07-07 (-1d) |  | 13.8d → 14.9d |
| TAEXELCL070007 | Earthing cables | 2027-08-19 → 2027-08-18 (-1d) | 2027-08-22 → 2027-08-21 (-1d) |  | -22.2d → -21.1d |
| 2 | **Telecommunication Works** | 2027-05-23 → 2027-05-30 (+7d) |  |  |  |
| TAEXTCCL070001 | Trench Cut off | 2027-05-23 → 2027-05-30 (+7d) | 2027-05-30 → 2027-06-06 (+7d) |  | -9.61d → -15.61d |
| 18 | **CCTV Works** | 2027-06-05 → 2027-06-09 (+4d) | 2027-07-26 → 2027-07-31 (+5d) |  |  |
| TAEXCCCL070001 | Pipe Installation with manhole | 2027-06-05 → 2027-06-09 (+4d) | 2027-06-15 → 2027-06-20 (+5d) |  | -26.55d → -30.75d |
| TAEXCCCL070002 | CCTV Swiches Lighting panels Installation | 2027-06-15 → 2027-06-20 (+5d) | 2027-06-29 → 2027-07-04 (+5d) |  | 14.45d → 10.25d |
| TAEXCCCL070003 | Cable laying and connected with Panels | 2027-06-29 → 2027-07-04 (+5d) | 2027-07-11 → 2027-07-15 (+4d) |  | 14.45d → 10.25d |
| TAEXCCCL070004 | Pole Installation with IP Outdoor CCTV POE Camera | 2027-07-11 → 2027-07-15 (+4d) | 2027-07-26 → 2027-07-31 (+5d) |  | 14.45d → 10.25d |
| 3 | **Potable Networks** |  | 2027-05-02 → 2027-04-20 (-12d) |  |  |
| TAEXPTCL070002 | Bedding Works |  | 2026-11-08 A | 44% → 100% | 148d → none |
| TAEXPTCL070004 | Backfilling Works for Trench |  | 2027-02-09 → 2027-02-08 (-1d) |  | 110.55d → 115.79d |
| TAEXPTCL070005 | Install Valves with fittings |  | 2027-02-09 → 2027-02-08 (-1d) |  | 110.55d → 115.79d |
| TAEXPTCL0700011 | Excavation works for Trench Part 01 | 2026-11-02 → 2026-11-07 A (+5d) | 2026-11-07 → 2026-11-08 A (+1d) | 0% → 100% | 1.39d → none |
| TAEXPTCL070007 | Valve Chamber works | 2027-04-11 → 2027-03-30 (-12d) | 2027-04-27 → 2027-04-15 (-12d) |  | 53.66d → 63.7d |
| TAEXPTCL070008 | Inspection Test | 2027-04-27 → 2027-04-15 (-12d) | 2027-05-02 → 2027-04-20 (-12d) |  | 81.46d → 91.5d |
| TAEXTSCL0700041 | Backfilling Works for Trench Part 01 | 2026-11-08 → 2026-11-12 (+4d) | 2026-11-17 → 2026-11-22 (+5d) |  | 174.95d → 175.67d |
| 5 | **Storm Networks** |  | 2027-02-04 → 2027-02-11 (+7d) |  |  |
| TAEXSTCL070007 | Leakage Test |  | 2027-02-04 → 2027-02-11 (+7d) |  | 43.14d → 37.14d |
| TAEXSTCL0700031 | Install GRP Pipes & Fittings Part 01 | 2026-11-08 → 2026-11-07 A (-1d) | 2026-11-14 → 2026-11-08 A (-6d) | 0% → 100% | 78.13d → none |
| TAEXSTCL0700051 | Manhole Installation with backfilling Part 01 | 2026-12-07 → 2026-11-07 A (-30d) | 2026-12-13 → 2026-12-09 (-4d) | 0% → 50% | 78.13d → 80.62d |
| TAEXSTCL0700041 | Backfilling Works for Trench Part 01 | 2026-11-22 → 2026-11-18 (-4d) | 2026-12-01 → 2026-11-28 (-3d) |  | 78.13d → 80.62d |
| TAEXSTCL070006 | Install Catch Basin with UPVC Pipes & Fittings | 2027-01-23 → 2027-01-30 (+7d) | 2027-02-02 → 2027-02-09 (+7d) |  | 43.14d → 37.14d |
| 6 | **Local Road 08** |  | 2027-08-24 → 2027-08-23 (-1d) |  |  |
| 12 | **Road Works** |  | 2027-07-29 → 2027-07-27 (-2d) |  |  |
| TAEXRDCL0800011 | Road Excavation and Disposal Part 01 | 2027-02-10 → 2027-02-17 (+7d) | 2027-02-16 → 2027-02-23 (+7d) |  | 59.04d → 53.04d |
| TAEXRDCL0800021 | Backfilling Works for Road Part 01 | 2027-02-16 → 2027-02-23 (+7d) | 2027-02-24 → 2027-03-03 (+7d) |  | 59.04d → 53.04d |
| TAEXRDCL0800031 | Subgrade Works Part 01 | 2027-02-24 → 2027-03-03 (+7d) | 2027-03-01 → 2027-03-08 (+7d) |  | 59.04d → 53.04d |
| TAEXRDCL080004 | ABC aggregate Base Course Works | 2027-03-01 → 2027-03-08 (+7d) | 2027-03-06 → 2027-03-13 (+7d) |  | 59.04d → 53.04d |
| TAEXRDCL080005 | MBC1 layer | 2027-03-06 → 2027-03-13 (+7d) | 2027-03-07 → 2027-03-14 (+7d) |  | 59.04d → 53.04d |
| TAEXRDCL080006 | BBC Base Course | 2027-03-07 → 2027-03-14 (+7d) | 2027-03-11 → 2027-03-18 (+7d) |  | 59.04d → 53.04d |
| TAEXRDCL080008 | Precast Concret Kerps | 2027-06-10 → 2027-06-08 (-2d) | 2027-06-27 → 2027-06-24 (-3d) |  | 1.39d → 3.14d |
| TAEXRDCL080007 | BWC Asphalt Wearing Course with RC | 2027-06-27 → 2027-06-24 (-3d) | 2027-06-28 → 2027-06-26 (-2d) |  | 3.39d → 5.14d |
| TAEXRDCL080009 | Precast Interlock Works | 2027-06-28 → 2027-06-26 (-2d) | 2027-07-18 → 2027-07-15 (-3d) |  | 3.39d → 5.14d |
| TAEXRDCL080010 | Stone Paving works | 2027-07-18 → 2027-07-15 (-3d) | 2027-07-26 → 2027-07-24 (-2d) |  | 3.39d → 5.14d |
| TAEXRDCL080011 | Road Marking | 2027-07-26 → 2027-07-24 (-2d) | 2027-07-27 → 2027-07-25 (-2d) |  | 3.39d → 5.14d |
| TAEXRDCL080012 | Traffic Sinage | 2027-07-27 → 2027-07-25 (-2d) | 2027-07-29 → 2027-07-27 (-2d) |  | 3.39d → 5.14d |
| 1 | **Electrical Works** |  | 2027-08-24 → 2027-08-23 (-1d) |  |  |
| TAEXELCL080001 | Trench Cut off | 2027-06-12 → 2027-06-10 (-2d) | 2027-06-23 → 2027-06-22 (-1d) |  | -28.35d → -27.25d |
| TAEXELCL080002 | Drawpit and PVC Pipes Installation | 2027-06-23 → 2027-06-22 (-1d) | 2027-06-29 → 2027-06-28 (-1d) |  | 4.8d → 5.9d |
| TAEXELCL080003 | Road Crossing Ducts | 2027-06-29 → 2027-06-28 (-1d) | 2027-07-01 → 2027-06-30 (-1d) |  | 4.8d → 5.9d |
| TAEXELCL080006 | Poles RC Foundation | 2027-06-29 → 2027-06-28 (-1d) | 2027-07-04 → 2027-07-03 (-1d) |  | 18.8d → 19.9d |
| TAEXELCL080004 | Trench Backfilling | 2027-07-01 → 2027-06-30 (-1d) | 2027-07-18 → 2027-07-17 (-1d) |  | 4.8d → 5.9d |

| ID | Task | Start | Finish | Complete | Total float |
| --- | --- | --- | --- | --- | --- |
| TAEXELCL080008 | Lighting Pole Installation with Luminares | 2027-07-04 → 2027-07-03 (-1d) | 2027-07-11 → 2027-07-10 (-1d) |  | 18.8d → 19.9d |
| TAEXELCL080005 | Cables Pulling | 2027-07-18 → 2027-07-17 (-1d) | 2027-07-21 → 2027-07-20 (-1d) |  | 4.8d → 5.9d |
| TAEXELCL080007 | Earthing cables | 2027-08-22 → 2027-08-21 (-1d) | 2027-08-24 → 2027-08-23 (-1d) |  | -22.2d → -21.1d |
| 2 | **Telecommunication Works** | 2027-05-30 → 2027-06-06 (+7d) | 2027-07-05 → 2027-07-12 (+7d) |  |  |
| TAEXTCCL080001 | Trench Cut off | 2027-05-30 → 2027-06-06 (+7d) | 2027-06-10 → 2027-06-17 (+7d) |  | -9.61d → -15.61d |
| TAEXTCCL080002 | Drawpit and PVC Pipes Installation | 2027-06-10 → 2027-06-17 (+7d) | 2027-06-16 → 2027-06-23 (+7d) |  | -9.61d → -15.61d |
| TAEXTCCL080003 | Road Crossing Ducts | 2027-06-16 → 2027-06-23 (+7d) | 2027-06-19 → 2027-06-26 (+7d) |  | 22.39d → 16.39d |
| TAEXTCCL080004 | Trench Backfilling | 2027-06-19 → 2027-06-26 (+7d) | 2027-07-05 → 2027-07-12 (+7d) |  | 22.39d → 16.39d |
| 19 | **CCTV Works** | 2027-06-15 → 2027-06-20 (+5d) | 2027-08-08 → 2027-08-12 (+4d) |  |  |
| TAEXCCCL080001 | Pipe Installation with manhole | 2027-06-15 → 2027-06-20 (+5d) | 2027-06-24 → 2027-06-29 (+5d) |  | -26.55d → -30.75d |
| TAEXCCCL080002 | CCTV Swiches Lighting panels Installation | 2027-06-24 → 2027-06-29 (+5d) | 2027-07-10 → 2027-07-14 (+4d) |  | 3.45d → -0.75d |
| TAEXCCCL080003 | Cable laying and connected with Panels | 2027-07-10 → 2027-07-14 (+4d) | 2027-07-21 → 2027-07-26 (+5d) |  | 3.45d → -0.75d |
| TAEXCCCL080004 | Pole Installation with IP Outdoor CCTV POE Camera | 2027-07-21 → 2027-07-26 (+5d) | 2027-08-08 → 2027-08-12 (+4d) |  | 3.45d → -0.75d |
| 3 | **Potable Networks** |  | 2027-05-17 → 2027-05-05 (-12d) |  |  |
| TAEXPTCL080001 | Excavation works for Trench |  |  | 75% → 90% | 53.66d → 63.7d |
| TAEXPTCL080006 | Install fire hydrent |  | 2027-03-02 → 2027-02-28 (-2d) |  | 101.78d → 104.02d |
| TAEXPTCL080007 | Valve Chamber works |  | 2027-05-12 → 2027-05-01 (-11d) |  | 53.66d → 63.7d |
| TAEXPTCL080005 | Install Valves with fittings | 2027-02-23 → 2027-02-20 (-3d) | 2027-02-28 → 2027-02-24 (-4d) |  | 110.55d → 115.79d |
| TAEXPTCL080008 | Inspection Test | 2027-05-12 → 2027-05-01 (-11d) | 2027-05-17 → 2027-05-05 (-12d) |  | 64.66d → 74.7d |
| 4 | **TSE Networks** |  | 2027-05-22 → 2027-05-10 (-12d) |  |  |
| TAEXTSCL080001 | Excavation works for Trench |  | 2026-11-15 → 2026-11-16 (+1d) |  | 56.3d → 54.7d |
| TAEXTSCL080006 | Valve Chamber works |  | 2026-12-29 → 2026-12-30 (+1d) |  | 183.26d → 182.9d |
| TAEXTSCL080002 | Bedding Works |  | 2026-11-22 → 2026-11-23 (+1d) |  | 162.61d → 167.05d |
| TAEXTSCL080007 | Inspection Test | 2027-05-17 → 2027-05-05 (-12d) | 2027-05-22 → 2027-05-10 (-12d) |  | 64.66d → 74.7d |
| 16 | **Sewerage Networks** |  | 2026-12-14 → 2026-12-20 (+6d) |  |  |
| TAEXSWCL080006 | Leakage Test |  | 2026-12-14 → 2026-11-08 A (-36d) | 90% → 100% | 195.7d → none |
| TAEXSWCL0800051 | Manhole Installation with backfilling Part 01 |  | 2026-12-13 → 2026-12-20 (+7d) |  | 195.7d → 190d |
| 5 | **Storm Networks** |  | 2027-01-18 → 2026-12-21 (-28d) |  |  |
| TAEXSTCL0800051 | Manhole Installation with backfilling Part 01 |  | 2026-12-07 → 2026-12-09 (+2d) |  | 24.04d → 24.78d |
| TAEXSTCL080007 | Leakage Test |  | 2027-01-18 → 2026-11-07 A (-72d) | 80% → 100% | 94.88d → none |
| TAEXSTCL0800031 | Install GRP Pipes & Fittings Part 01 |  | 2026-11-08 → 2026-11-07 A (-1d) | 90% → 100% | 24.04d → none |
| TAEXSTCL0800041 | Backfilling Works for Trench Part 01 |  | 2026-11-25 → 2026-11-28 (+3d) |  | 24.04d → 24.78d |
| TAEXSTCL080006 | Install Catch Basin with UPVC Pipes & Fittings |  | 2026-12-20 → 2026-12-21 (+1d) |  | 24.04d → 24.78d |
| 3 | **Local Road 09** |  | 2027-08-26 → 2027-08-25 (-1d) |  |  |
| 12 | **Road Works** |  | 2027-08-01 → 2027-07-29 (-3d) |  |  |
| TAEXRDCL090004 | ABC aggregate Base Course Works | 2027-02-28 → 2027-03-04 (+4d) | 2027-03-06 → 2027-03-10 (+4d) |  | 61.19d → 57.19d |
| TAEXRDCL090005 | MBC1 layer | 2027-03-06 → 2027-03-10 (+4d) | 2027-03-07 → 2027-03-11 (+4d) |  | 61.19d → 57.19d |
| TAEXRDCL090006 | BBC Base Course | 2027-03-07 → 2027-03-11 (+4d) | 2027-03-09 → 2027-03-14 (+5d) |  | 61.19d → 57.19d |
| TAEXRDCL090008 | Precast Concret Kerps | 2027-06-27 → 2027-06-24 (-3d) | 2027-07-12 → 2027-07-10 (-2d) |  | 1.39d → 3.14d |
| TAEXRDCL090007 | BWC Asphalt Wearing Course with RC | 2027-07-12 → 2027-07-10 (-2d) | 2027-07-13 → 2027-07-11 (-2d) |  | 1.39d → 3.14d |
| TAEXRDCL090009 | Precast Interlock Works | 2027-07-13 → 2027-07-11 (-2d) | 2027-07-27 → 2027-07-25 (-2d) |  | 1.39d → 3.14d |
| TAEXRDCL090010 | Stone Paving works | 2027-07-27 → 2027-07-25 (-2d) | 2027-07-29 → 2027-07-27 (-2d) |  | 1.39d → 3.14d |
| TAEXRDCL090011 | Road Marking | 2027-07-29 → 2027-07-27 (-2d) | 2027-07-31 → 2027-07-28 (-3d) |  | 1.39d → 3.14d |
| TAEXRDCL090012 | Traffic Sinage | 2027-07-31 → 2027-07-28 (-3d) | 2027-08-01 → 2027-07-29 (-3d) |  | 1.39d → 3.14d |
| 1 | **Electrical Works** | 2027-06-23 → 2027-06-22 (-1d) | 2027-08-26 → 2027-08-25 (-1d) |  |  |
| TAEXELCL090001 | Trench Cut off | 2027-06-23 → 2027-06-22 (-1d) | 2027-07-06 → 2027-07-05 (-1d) |  | -28.35d → -27.25d |
| TAEXELCL090002 | Drawpit and PVC Pipes Installation | 2027-07-06 → 2027-07-05 (-1d) | 2027-07-17 → 2027-07-15 (-2d) |  | -3.2d → -2.1d |
| TAEXELCL090003 | Road Crossing Ducts | 2027-07-17 → 2027-07-15 (-2d) | 2027-07-19 → 2027-07-18 (-1d) |  | -3.2d → -2.1d |
| TAEXELCL090006 | Poles RC Foundation | 2027-07-17 → 2027-07-15 (-2d) | 2027-07-20 → 2027-07-19 (-1d) |  | 6.8d → 7.9d |
| TAEXELCL090004 | Trench Backfilling | 2027-07-19 → 2027-07-18 (-1d) | 2027-07-31 → 2027-07-29 (-2d) |  | -3.2d → -2.1d |
| TAEXELCL090008 | Lighting Pole Installation with Luminares | 2027-07-20 → 2027-07-19 (-1d) | 2027-07-25 → 2027-07-24 (-1d) |  | 6.8d → 7.9d |
| TAEXELCL090005 | Cables Pulling | 2027-07-31 → 2027-07-29 (-2d) | 2027-08-02 → 2027-08-01 (-1d) |  | -3.2d → -2.1d |
| TAEXELCL090007 | Earthing cables | 2027-08-24 → 2027-08-23 (-1d) | 2027-08-26 → 2027-08-25 (-1d) |  | -22.2d → -21.1d |
| 2 | **Telecommunication Works** | 2027-06-10 → 2027-06-17 (+7d) | 2027-07-05 → 2027-07-12 (+7d) |  |  |
| TAEXTCCL090001 | Trench Cut off | 2027-06-10 → 2027-06-17 (+7d) | 2027-06-16 → 2027-06-23 (+7d) |  | -9.61d → -15.61d |
| TAEXTCCL090002 | Drawpit and PVC Pipes Installation | 2027-06-16 → 2027-06-23 (+7d) | 2027-06-21 → 2027-06-28 (+7d) |  | -9.61d → -15.61d |
| TAEXTCCL090003 | Road Crossing Ducts | 2027-06-21 → 2027-06-28 (+7d) | 2027-06-23 → 2027-06-30 (+7d) |  | 22.39d → 16.39d |
| TAEXTCCL090004 | Trench Backfilling | 2027-06-23 → 2027-06-30 (+7d) | 2027-07-05 → 2027-07-12 (+7d) |  | 22.39d → 16.39d |
| 20 | **CCTV Works** | 2027-06-24 → 2027-06-29 (+5d) | 2027-08-07 → 2027-08-11 (+4d) |  |  |
| TAEXCCCL090001 | Pipe Installation with manhole | 2027-06-24 → 2027-06-29 (+5d) | 2027-07-03 → 2027-07-07 (+4d) |  | -26.55d → -30.75d |
| TAEXCCCL090002 | CCTV Swiches Lighting panels Installation | 2027-07-03 → 2027-07-07 (+4d) | 2027-07-14 → 2027-07-19 (+5d) |  | 4.45d → 0.25d |
| TAEXCCCL090003 | Cable laying and connected with Panels | 2027-07-14 → 2027-07-19 (+5d) | 2027-07-24 → 2027-07-28 (+4d) |  | 4.45d → 0.25d |
| TAEXCCCL090004 | Pole Installation with IP Outdoor CCTV POE Camera | 2027-07-24 → 2027-07-28 (+4d) | 2027-08-07 → 2027-08-11 (+4d) |  | 4.45d → 0.25d |
| 3 | **Potable Networks** |  | 2027-06-01 → 2027-05-20 (-12d) |  |  |
| TAEXPTCL090007 | Valve Chamber works | 2027-05-12 → 2027-05-01 (-11d) | 2027-05-29 → 2027-05-17 (-12d) |  | 53.66d → 63.7d |
| TAEXPTCL090008 | Inspection Test | 2027-05-29 → 2027-05-17 (-12d) | 2027-06-01 → 2027-05-20 (-12d) |  | 55.66d → 65.7d |
| 5 | **Storm Networks** |  | 2027-01-06 → 2027-01-12 (+6d) |  |  |
| TAEXSTCL090007 | Leakage Test |  | 2027-01-06 → 2026-11-07 A (-60d) | 85% → 100% | 61.19d → none |
| TAEXSTCL090006 | Install Catch Basin with UPVC Pipes & Fittings | 2026-12-27 → 2027-01-03 (+7d) | 2027-01-05 → 2027-01-12 (+7d) |  | 18.2d → 14.45d |
| 4 | **Upgrade Local 06** |  | 2027-09-01 → 2027-08-31 (-1d) |  |  |

| ID | Task | Start | Finish | Total float |
| --- | --- | --- | --- | --- |
| 22 | **Electrical Works** |  | 2027-09-01 → 2027-08-31 (-1d) |  |
| TAEXELCU060002 | Drawpit and PVC Pipes Installation |  | 2027-08-11 → 2027-08-10 (-1d) | -25.33d → -24.23d |
| TAEXELCU060003 | Road Crossing Ducts |  | 2027-08-14 → 2027-08-12 (-2d) | -25.33d → -24.23d |
| TAEXELCU060001 | Trench Cut off | 2027-07-26 → 2027-07-25 (-1d) | 2027-08-07 → 2027-08-05 (-2d) | -28.35d → -27.25d |
| TAEXELCU060006 | Poles RC Foundation | 2027-08-11 → 2027-08-10 (-1d) | 2027-08-16 → 2027-08-15 (-1d) | -18.32d → -17.22d |
| TAEXELCU060004 | Trench Backfilling | 2027-08-14 → 2027-08-12 (-2d) | 2027-08-25 → 2027-08-24 (-1d) | -25.33d → -24.23d |
| TAEXELCU060008 | Lighting Pole Installation with Luminares | 2027-08-16 → 2027-08-15 (-1d) | 2027-08-23 → 2027-08-22 (-1d) | -18.32d → -17.22d |
| TAEXELCU060005 | Cables Pulling | 2027-08-25 → 2027-08-24 (-1d) | 2027-08-30 → 2027-08-29 (-1d) | -25.33d → -24.23d |
| TAEXELCU060007 | Earthing cables | 2027-08-30 → 2027-08-29 (-1d) | 2027-09-01 → 2027-08-31 (-1d) | -25.33d → -24.23d |
| 23 | **CCTV Works** | 2027-07-11 → 2027-07-15 (+4d) | 2027-08-23 → 2027-08-28 (+5d) |  |
| TAEXCCCU060001 | Pipe Installation with manhole | 2027-07-11 → 2027-07-15 (+4d) | 2027-07-20 → 2027-07-25 (+5d) | -21.55d → -25.75d |
| TAEXCCCU060002 | CCTV Swiches Lighting panels Installation | 2027-07-20 → 2027-07-25 (+5d) | 2027-08-01 → 2027-08-05 (+4d) | -9.55d → -13.75d |
| TAEXCCCU060003 | Cable laying and connected with Panels | 2027-08-01 → 2027-08-05 (+4d) | 2027-08-11 → 2027-08-16 (+5d) | -9.55d → -13.75d |
| TAEXCCCU060004 | Pole Installation with IP Outdoor CCTV POE Camera | 2027-08-11 → 2027-08-16 (+5d) | 2027-08-23 → 2027-08-28 (+5d) | -9.55d → -13.75d |
| 7 | **Upgrade Local 07** |  | 2027-09-03 → 2027-09-05 (+2d) |  |
| 23 | **Electrical Works** |  | 2027-09-03 → 2027-09-02 (-1d) |  |
| TAEXELCU070003 | Road Crossing Ducts |  | 2027-08-19 → 2027-08-18 (-1d) | -25.86d → -24.76d |
| TAEXELCU070002 | Drawpit and PVC Pipes Installation |  | 2027-08-18 → 2027-08-17 (-1d) | -25.86d → -24.76d |
| TAEXELCU070001 | Trench Cut off | 2027-08-07 → 2027-08-05 (-2d) | 2027-08-15 → 2027-08-14 (-1d) | -28.35d → -27.25d |
| TAEXELCU070006 | Poles RC Foundation | 2027-08-18 → 2027-08-17 (-1d) | 2027-08-22 → 2027-08-21 (-1d) | -22.15d → -21.05d |
| TAEXELCU070004 | Trench Backfilling | 2027-08-19 → 2027-08-18 (-1d) | 2027-08-29 → 2027-08-28 (-1d) | -25.86d → -24.76d |
| TAEXELCU070008 | Lighting Pole Installation with Luminares | 2027-08-22 → 2027-08-21 (-1d) | 2027-08-28 → 2027-08-26 (-2d) | -22.15d → -21.05d |
| TAEXELCU070005 | Cables Pulling | 2027-08-29 → 2027-08-28 (-1d) | 2027-09-01 → 2027-08-31 (-1d) | -25.86d → -24.76d |
| TAEXELCU070007 | Earthing cables | 2027-09-01 → 2027-08-31 (-1d) | 2027-09-03 → 2027-09-02 (-1d) | -25.86d → -24.76d |
| 24 | **CCTV Works** | 2027-07-20 → 2027-07-25 (+5d) | 2027-09-01 → 2027-09-05 (+4d) |  |
| TAEXCCCU070001 | Pipe Installation with manhole | 2027-07-20 → 2027-07-25 (+5d) | 2027-07-29 → 2027-08-03 (+5d) | -21.55d → -25.75d |
| TAEXCCCU070002 | CCTV Swiches Lighting panels Installation | 2027-07-29 → 2027-08-03 (+5d) | 2027-08-10 → 2027-08-15 (+5d) | -17.55d → -21.75d |
| TAEXCCCU070003 | Cable laying and connected with Panels | 2027-08-10 → 2027-08-15 (+5d) | 2027-08-21 → 2027-08-25 (+4d) | -17.55d → -21.75d |
| TAEXCCCU070004 | Pole Installation with IP Outdoor CCTV POE Camera | 2027-08-21 → 2027-08-25 (+4d) | 2027-09-01 → 2027-09-05 (+4d) | -17.55d → -21.75d |
| 24 | **Electrical Works** |  | 2027-09-05 → 2027-09-04 (-1d) |  |
| TAEXELCU080001 | Trench Cut off |  | 2027-08-16 → 2027-08-15 (-1d) | -28.35d → -27.25d |
| TAEXELCU080004 | Trench Backfilling | 2027-08-16 → 2027-08-15 (-1d) | 2027-08-25 → 2027-08-24 (-1d) | -20.35d → -19.25d |
| TAEXELCU080006 | Poles RC Foundation | 2027-08-16 → 2027-08-15 (-1d) | 2027-08-19 → 2027-08-18 (-1d) | -20.35d → -19.25d |
| TAEXELCU080008 | Lighting Pole Installation with Luminares | 2027-08-19 → 2027-08-18 (-1d) | 2027-08-25 → 2027-08-24 (-1d) | -20.35d → -19.25d |
| TAEXELCU080005 | Cables Pulling | 2027-08-25 → 2027-08-24 (-1d) | 2027-08-29 → 2027-08-28 (-1d) | -20.35d → -19.25d |
| TAEXELCU080007 | Earthing cables | 2027-09-03 → 2027-09-02 (-1d) | 2027-09-05 → 2027-09-04 (-1d) | -25.86d → -24.76d |
| 25 | **CCTV Works** | 2027-07-20 → 2027-07-25 (+5d) | 2027-09-01 → 2027-09-05 (+4d) |  |
| TAEXCCCU080001 | Pipe Installation with manhole | 2027-07-20 → 2027-07-25 (+5d) | 2027-07-29 → 2027-08-03 (+5d) | -21.55d → -25.75d |
| TAEXCCCU080002 | CCTV Swiches Lighting panels Installation | 2027-07-29 → 2027-08-03 (+5d) | 2027-08-10 → 2027-08-15 (+5d) | -17.55d → -21.75d |
| TAEXCCCU080003 | Cable laying and connected with Panels | 2027-08-10 → 2027-08-15 (+5d) | 2027-08-21 → 2027-08-25 (+4d) | -17.55d → -21.75d |
| TAEXCCCU080004 | Pole Installation with IP Outdoor CCTV POE Camera | 2027-08-21 → 2027-08-25 (+4d) | 2027-09-01 → 2027-09-05 (+4d) | -17.55d → -21.75d |
| 9 | **Upgrade Local 09** |  | 2027-09-09 → 2027-09-14 (+5d) |  |
| 26 | **Electrical Works** |  | 2027-09-07 → 2027-09-06 (-1d) |  |
| TAEXELCU090001 | Trench Cut off | 2027-08-16 → 2027-08-15 (-1d) | 2027-08-24 → 2027-08-23 (-1d) | -28.35d → -27.25d |
| TAEXELCU090004 | Trench Backfilling | 2027-08-24 → 2027-08-23 (-1d) | 2027-09-02 → 2027-09-01 (-1d) | -25.35d → -24.25d |
| TAEXELCU090006 | Poles RC Foundation | 2027-08-24 → 2027-08-23 (-1d) | 2027-08-29 → 2027-08-28 (-1d) | -28.35d → -27.25d |
| TAEXELCU090008 | Lighting Pole Installation with Luminares | 2027-08-29 → 2027-08-28 (-1d) | 2027-09-03 → 2027-09-02 (-1d) | -28.35d → -27.25d |
| TAEXELCU090005 | Cables Pulling | 2027-09-02 → 2027-09-01 (-1d) | 2027-09-05 → 2027-09-04 (-1d) | -25.35d → -24.25d |
| TAEXELCU090007 | Earthing cables | 2027-09-05 → 2027-09-04 (-1d) | 2027-09-07 → 2027-09-06 (-1d) | -25.86d → -24.76d |
| 1 | **CCTV Works** | 2027-07-29 → 2027-08-03 (+5d) | 2027-09-09 → 2027-09-14 (+5d) |  |
| TAEXCCCU090001 | Pipe Installation with manhole | 2027-07-29 → 2027-08-03 (+5d) | 2027-08-07 → 2027-08-11 (+4d) | -21.55d → -25.75d |
| TAEXCCCU090002 | CCTV Swiches Lighting panels Installation | 2027-08-07 → 2027-08-11 (+4d) | 2027-08-18 → 2027-08-23 (+5d) | -21.55d → -25.75d |
| TAEXCCCU090003 | Cable laying and connected with Panels | 2027-08-18 → 2027-08-23 (+5d) | 2027-08-30 → 2027-09-03 (+4d) | -21.55d → -25.75d |
| TAEXCCCU090004 | Pole Installation with IP Outdoor CCTV POE Camera | 2027-08-30 → 2027-09-03 (+4d) | 2027-09-09 → 2027-09-14 (+5d) | -21.55d → -25.75d |
| 10 | **Upgrade Local 12** |  | 2027-09-12 → 2027-09-11 (-1d) |  |
| 18 | **Road works** | 2027-02-28 → 2027-03-07 (+7d) | 2027-06-06 → 2027-06-13 (+7d) |  |
| TAEXRDCU120002 | Precast Concret Kerps | 2027-02-28 → 2027-03-07 (+7d) | 2027-03-21 → 2027-03-28 (+7d) | 49.4d → 43.4d |
| TAEXRDCU120001 | BWC Asphalt Wearing Course with RC | 2027-05-06 → 2027-05-13 (+7d) | 2027-05-08 → 2027-05-15 (+7d) | 49.4d → 43.4d |
| TAEXRDCU120003 | Precast Interlock Works | 2027-05-08 → 2027-05-15 (+7d) | 2027-05-26 → 2027-06-02 (+7d) | 49.4d → 43.4d |
| TAEXRDCU120004 | Stone Paving works | 2027-05-26 → 2027-06-02 (+7d) | 2027-06-01 → 2027-06-08 (+7d) | 49.4d → 43.4d |
| TAEXRDCU120005 | Road Marking | 2027-06-01 → 2027-06-08 (+7d) | 2027-06-02 → 2027-06-09 (+7d) | 49.4d → 43.4d |
| TAEXRDCU120006 | Traffic Sinage | 2027-06-02 → 2027-06-09 (+7d) | 2027-06-06 → 2027-06-13 (+7d) | 49.4d → 43.4d |
| 19 | **Electrical Works** |  | 2027-09-12 → 2027-09-11 (-1d) |  |
| TAEXELCU120001 | Trench Cut off |  | 2027-05-03 → 2027-05-02 (-1d) | -28.35d → -27.25d |
| TAEXELCU120002 | Drawpit and PVC Pipes Installation |  | 2027-05-05 → 2027-05-03 (-2d) | 58.91d → 60.01d |
| TAEXELCU120003 | Road Crossing Ducts |  | 2027-05-05 → 2027-05-04 (-1d) | 64.67d → 65.77d |
| TAEXELCU120005 | Cables Pulling |  | 2027-06-14 → 2027-06-13 (-1d) | 48.56d → 49.66d |
| TAEXELCU120004 | Trench Backfilling |  | 2027-06-07 → 2027-06-06 (-1d) | 48.56d → 49.66d |
| TAEXELCU120006 | Poles RC Foundation | 2027-05-05 → 2027-05-03 (-2d) | 2027-05-13 → 2027-05-11 (-2d) | 58.91d → 60.01d |
| TAEXELCU120008 | Lighting Pole Installation with Luminares | 2027-05-13 → 2027-05-11 (-2d) | 2027-05-25 → 2027-05-23 (-2d) | 58.91d → 60.01d |

| ID | Task | Start | Finish | Complete | Total float |
| --- | --- | --- | --- | --- | --- |
| TAEXELCU120007 | Earthing cables | 2027-09-07 → 2027-09-06 (-1d) | 2027-09-12 → 2027-09-11 (-1d) |  | -25.86d → -24.76d |
| 1 | **Telecommunication Works** | 2027-04-15 → 2027-04-22 (+7d) | 2027-07-26 → 2027-08-02 (+7d) |  |  |
| TAEXTCCU120001 | Trench Cut off | 2027-04-15 → 2027-04-22 (+7d) | 2027-05-03 → 2027-05-10 (+7d) |  | -9.61d → -15.61d |
| TAEXTCCU120002 | Drawpit and PVC Pipes Installation | 2027-06-21 → 2027-06-28 (+7d) | 2027-07-01 → 2027-07-08 (+7d) |  | -9.61d → -15.61d |
| TAEXTCCU120003 | Road Crossing Ducts | 2027-07-01 → 2027-07-08 (+7d) | 2027-07-06 → 2027-07-13 (+7d) |  | 4.39d → -1.61d |
| TAEXTCCU120004 | Trench Backfilling | 2027-07-06 → 2027-07-13 (+7d) | 2027-07-26 → 2027-08-02 (+7d) |  | 4.39d → -1.61d |
| 15 | **CCTV Works** | 2027-04-25 → 2027-04-29 (+4d) | 2027-06-20 → 2027-06-24 (+4d) |  |  |
| TAEXCCCU120001 | Pipe Installation with manhole | 2027-04-25 → 2027-04-29 (+4d) | 2027-05-08 → 2027-05-12 (+4d) |  | -26.55d → -30.75d |
| TAEXCCCU120002 | CCTV Swiches Lighting panels Installation | 2027-05-08 → 2027-05-12 (+4d) | 2027-05-22 → 2027-05-26 (+4d) |  | 45.45d → 41.25d |
| TAEXCCCU120003 | Cable laying and connected with Panels | 2027-05-22 → 2027-05-26 (+4d) | 2027-06-03 → 2027-06-08 (+5d) |  | 45.45d → 41.25d |
| TAEXCCCU120004 | Pole Installation with IP Outdoor CCTV POE Camera | 2027-06-03 → 2027-06-08 (+5d) | 2027-06-20 → 2027-06-24 (+4d) |  | 45.45d → 41.25d |
| 3 | **TSE Networks** |  | 2027-05-31 → 2027-06-02 (+2d) |  |  |
| TAEXTSCU120005 | Install Valves with fittings |  | 2027-05-10 → 2027-05-11 (+1d) |  | 56.3d → 54.7d |
| TAEXTSCU120006 | Valve Chamber works |  | 2027-05-25 → 2027-05-27 (+2d) |  | 56.3d → 54.7d |
| TAEXTSCU120001 | Excavation works for Trench | 2027-01-13 → 2027-01-14 (+1d) | 2027-02-08 → 2027-02-09 (+1d) |  | 56.3d → 54.7d |
| TAEXTSCU120002 | Bedding Works | 2027-02-08 → 2027-02-09 (+1d) | 2027-02-10 → 2027-02-11 (+1d) |  | 106.3d → 104.7d |
| TAEXTSCU120003 | Install Pipes & Fittings | 2027-04-10 → 2027-04-11 (+1d) | 2027-04-19 → 2027-04-20 (+1d) |  | 56.3d → 54.7d |
| TAEXTSCU120004 | Backfilling Works for Trench | 2027-04-19 → 2027-04-20 (+1d) | 2027-05-10 → 2027-05-11 (+1d) |  | 56.3d → 54.7d |
| TAEXTSCU120007 | Inspection Test | 2027-05-25 → 2027-05-27 (+2d) | 2027-05-31 → 2027-06-02 (+2d) |  | 56.3d → 54.7d |
| 12 | **Sewerage Networks** | 2026-11-16 → 2026-11-18 (+2d) | 2027-01-28 → 2027-01-31 (+3d) |  |  |
| TAEXSWCU120001 | Excavation works for Trench | 2026-11-16 → 2026-11-18 (+2d) | 2026-12-05 → 2026-12-07 (+2d) |  | 141.38d → 139.3d |
| TAEXSWCU120002 | Bedding Works | 2026-12-05 → 2026-12-07 (+2d) | 2026-12-09 → 2026-12-12 (+3d) |  | 156.38d → 154.3d |
| TAEXSWCU120003 | Install GRP Pipes & Fittings | 2026-12-09 → 2026-12-12 (+3d) | 2026-12-26 → 2026-12-28 (+2d) |  | 156.38d → 154.3d |
| TAEXSWCU120004 | Backfilling Works for Trench | 2026-12-28 → 2026-12-30 (+2d) | 2027-01-12 → 2027-01-14 (+2d) |  | 156.38d → 154.3d |
| TAEXSWCU120005 | Manhole Installation with backfilling | 2027-01-10 → 2027-01-12 (+2d) | 2027-01-24 → 2027-01-26 (+2d) |  | 156.38d → 154.3d |
| TAEXSWCU120006 | Leakage Test | 2027-01-24 → 2027-01-26 (+2d) | 2027-01-28 → 2027-01-31 (+3d) |  | 156.38d → 154.3d |
| 4 | **Storm Networks** | 2027-05-06 → 2026-11-07 (-180d) | 2027-07-24 → 2027-07-19 (-5d) |  |  |
| TAEXSTCU120001 | Excavation works for Trench | 2027-05-06 → 2026-11-07 A (-180d) | 2027-05-27 → 2027-05-20 (-7d) | 0% → 25% | 17.92d → 23.52d |
| TAEXSTCU120002 | Bedding Works | 2027-05-27 → 2027-05-20 (-7d) | 2027-06-01 → 2027-05-25 (-7d) |  | 17.92d → 23.52d |
| TAEXSTCU120003 | Install GRP Pipes & Fittings | 2027-06-01 → 2027-05-25 (-7d) | 2027-06-17 → 2027-06-10 (-7d) |  | 17.92d → 23.52d |
| TAEXSTCU120004 | Backfilling Works for Trench | 2027-06-20 → 2027-06-13 (-7d) | 2027-07-05 → 2027-06-28 (-7d) |  | 17.92d → 23.52d |
| TAEXSTCU120005 | Manhole Installation with backfilling | 2027-06-21 → 2027-06-14 (-7d) | 2027-07-05 → 2027-06-28 (-7d) |  | 17.92d → 23.52d |
| TAEXSTCU120006 | Install Catch Basin with UPVC Pipes & Fittings | 2027-07-05 → 2027-06-30 (-5d) | 2027-07-19 → 2027-07-14 (-5d) |  | 17.92d → 21.02d |
| TAEXSTCU120007 | Leakage Test | 2027-07-19 → 2027-07-14 (-5d) | 2027-07-24 → 2027-07-19 (-5d) |  | 17.92d → 21.02d |
| 11 | **Upgrade Local 14** |  | 2027-09-14 → 2027-09-13 (-1d) |  |  |
| 21 | **Electrical Works** |  | 2027-09-14 → 2027-09-13 (-1d) |  |  |
| TAEXELCU140001 | Trench Cut off |  | 2027-07-26 → 2027-07-25 (-1d) |  | -28.35d → -27.25d |
| TAEXELCU140005 | Cables Pulling |  | 2027-08-21 → 2027-08-16 (-5d) |  | -5.14d → -1.14d |
| TAEXELCU140004 | Trench Backfilling | 2027-08-05 → 2026-11-07 A (-271d) | 2027-08-17 → 2027-08-12 (-5d) | 0% → 29% | -5.14d → -1.14d |
| TAEXELCU140002 | Drawpit and PVC Pipes Installation | 2027-07-26 → 2027-07-25 (-1d) | 2027-08-02 → 2027-08-01 (-1d) |  | -10.3d → -9.2d |
| TAEXELCU140003 | Road Crossing Ducts | 2027-08-02 → 2027-08-01 (-1d) | 2027-08-05 → 2027-08-04 (-1d) |  | -5.14d → -1.14d |
| TAEXELCU140006 | Poles RC Foundation | 2027-08-02 → 2027-08-01 (-1d) | 2027-08-07 → 2027-08-05 (-2d) |  | -10.3d → -9.2d |
| TAEXELCU140008 | Lighting Pole Installation with Luminares | 2027-08-07 → 2027-08-05 (-2d) | 2027-08-14 → 2027-08-12 (-2d) |  | -10.3d → -9.2d |
| TAEXELCU140007 | Earthing cables | 2027-09-12 → 2027-09-11 (-1d) | 2027-09-14 → 2027-09-13 (-1d) |  | -25.86d → -24.76d |
| 22 | **CCTV Works** | 2027-07-11 → 2027-07-15 (+4d) | 2027-08-23 → 2027-08-28 (+5d) |  |  |
| TAEXCCCU140001 | Pipe Installation with manhole | 2027-07-11 → 2027-07-15 (+4d) | 2027-07-19 → 2027-07-24 (+5d) |  | -26.55d → -30.75d |
| TAEXCCCU140002 | CCTV Swiches Lighting panels Installation | 2027-07-19 → 2027-07-24 (+5d) | 2027-08-02 → 2027-08-07 (+5d) |  | -26.55d → -30.75d |
| TAEXCCCU140003 | Cable laying and connected with Panels | 2027-08-02 → 2027-08-07 (+5d) | 2027-08-11 → 2027-08-16 (+5d) |  | -9.55d → -13.75d |
| TAEXCCCU140004 | Pole Installation with IP Outdoor CCTV POE Camera | 2027-08-11 → 2027-08-16 (+5d) | 2027-08-23 → 2027-08-28 (+5d) |  | -9.55d → -13.75d |
| 12 | **Upgrade Local 18** | 2027-07-29 → 2027-08-03 (+5d) | 2027-09-01 → 2027-09-05 (+4d) |  |  |
| 27 | **CCTV Works** | 2027-07-29 → 2027-08-03 (+5d) | 2027-09-01 → 2027-09-05 (+4d) |  |  |
| TAEXCCCU180001 | Pipe Installation with manhole | 2027-07-29 → 2027-08-03 (+5d) | 2027-08-08 → 2027-08-12 (+4d) |  | -17.55d → -21.75d |
| TAEXCCCU180002 | CCTV Swiches Lighting panels Installation | 2027-08-08 → 2027-08-12 (+4d) | 2027-08-18 → 2027-08-23 (+5d) |  | -17.55d → -21.75d |
| TAEXCCCU180003 | Cable laying and connected with Panels | 2027-08-18 → 2027-08-23 (+5d) | 2027-08-26 → 2027-08-31 (+5d) |  | -17.55d → -21.75d |
| TAEXCCCU180004 | Pole Installation with IP Outdoor CCTV POE Camera | 2027-08-26 → 2027-08-31 (+5d) | 2027-09-01 → 2027-09-05 (+4d) |  | -17.55d → -21.75d |
| 13 | **Upgrade Local 20** |  | 2027-09-19 → 2027-09-18 (-1d) |  |  |
| 16 | **Electrical Works** |  | 2027-09-19 → 2027-09-18 (-1d) |  |  |
| TAEXELCU200001 | Trench Cut off |  | 2027-03-31 → 2027-03-29 (-2d) |  | -28.35d → -27.25d |
| TAEXELCU200005 | Cables Pulling |  | 2027-05-01 → 2027-04-27 (-4d) |  | 77.82d → 80.52d |
| TAEXELCU200004 | Trench Backfilling |  | 2027-04-28 → 2027-04-25 (-3d) | 44% → 59% | 77.82d → 80.52d |
| TAEXELCU200009 | Install Substation & RMU | 2027-05-01 → 2027-04-27 (-4d) | 2027-05-11 → 2027-05-08 (-3d) |  | 77.82d → 80.52d |
| TAEXELCU200007 | Earthing cables | 2027-09-14 → 2027-09-13 (-1d) | 2027-09-19 → 2027-09-18 (-1d) |  | -25.86d → -24.76d |
| 14 | **CCTV Works** | 2027-03-23 → 2027-03-28 (+5d) | 2027-09-11 → 2027-09-15 (+4d) |  |  |
| TAEXCCCU200001 | Pipe Installation with manhole | 2027-03-23 → 2027-03-28 (+5d) | 2027-04-04 → 2027-04-08 (+4d) |  | -26.55d → -30.75d |
| TAEXCCCU200002 | CCTV Swiches Lighting panels Installation | 2027-08-02 → 2027-08-07 (+5d) | 2027-08-17 → 2027-08-22 (+5d) |  | -26.55d → -30.75d |
| TAEXCCCU200003 | Cable laying and connected with Panels | 2027-08-17 → 2027-08-22 (+5d) | 2027-08-29 → 2027-09-02 (+4d) |  | -26.55d → -30.75d |
| TAEXCCCU200004 | Pole Installation with IP Outdoor CCTV POE Camera | 2027-08-29 → 2027-09-02 (+4d) | 2027-09-11 → 2027-09-15 (+4d) |  | -26.55d → -30.75d |
| 1 | **Potable Networks** | 2026-11-02 → 2026-11-09 (+7d) |  |  |  |
| TAEXPTCU200007 | Valve Chamber works | 2026-11-02 → 2026-11-09 (+7d) | 2026-11-21 → 2026-11-28 (+7d) |  | 105.9d → 110.3d |
| TAEXPTCU200008 | Inspection Test | 2026-11-22 → 2026-11-29 (+7d) | 2026-11-26 → 2026-12-03 (+7d) |  | 215d → 209d |

| ID | Task | Start | Finish | Total float |
| --- | --- | --- | --- | --- |
| 2 | **TSE Networks** | 2027-02-08 → 2027-02-09 (+1d) | 2027-04-28 → 2027-04-29 (+1d) |  |
| TAEXTSCU200001 | Excavation works for Trench | 2027-02-08 → 2027-02-09 (+1d) | 2027-03-03 → 2027-03-04 (+1d) | 56.3d → 54.7d |
| TAEXTSCU200002 | Bedding Works | 2027-03-03 → 2027-03-04 (+1d) | 2027-03-06 → 2027-03-07 (+1d) | 73.3d → 71.7d |
| TAEXTSCU200003 | Install Pipes & Fittings | 2027-03-06 → 2027-03-07 (+1d) | 2027-03-15 → 2027-03-16 (+1d) | 73.3d → 71.7d |
| TAEXTSCU200004 | Backfilling Works for Trench | 2027-03-15 → 2027-03-16 (+1d) | 2027-04-03 → 2027-04-04 (+1d) | 84.8d → 83.2d |
| TAEXTSCU200005 | Install Valves with fittings | 2027-03-29 → 2027-03-30 (+1d) | 2027-04-03 → 2027-04-04 (+1d) | 84.8d → 83.2d |
| TAEXTSCU200006 | Valve Chamber works | 2027-04-03 → 2027-04-04 (+1d) | 2027-04-22 → 2027-04-24 (+2d) | 84.8d → 83.2d |
| TAEXTSCU200007 | Inspection Test | 2027-04-22 → 2027-04-24 (+2d) | 2027-04-28 → 2027-04-29 (+1d) | 84.8d → 83.2d |
| 3 | **Sewerage Networks** | 2026-12-05 → 2026-12-07 (+2d) | 2027-02-11 → 2027-02-14 (+3d) |  |
| TAEXSWCU200001 | Excavation works for Trench | 2026-12-05 → 2026-12-07 (+2d) | 2026-12-22 → 2026-12-24 (+2d) | 141.38d → 139.3d |
| TAEXSWCU200002 | Bedding Works | 2026-12-22 → 2026-12-24 (+2d) | 2026-12-26 → 2026-12-28 (+2d) | 144.38d → 142.3d |
| TAEXSWCU200003 | Install GRP Pipes & Fittings | 2026-12-26 → 2026-12-28 (+2d) | 2027-01-09 → 2027-01-11 (+2d) | 144.38d → 142.3d |
| TAEXSWCU200004 | Backfilling Works for Trench | 2027-01-06 → 2027-01-09 (+3d) | 2027-01-26 → 2027-01-28 (+2d) | 144.38d → 142.3d |
| TAEXSWCU200005 | Manhole Installation with backfilling | 2027-01-19 → 2027-01-21 (+2d) | 2027-02-07 → 2027-02-09 (+2d) | 144.38d → 142.3d |
| TAEXSWCU200006 | Leakage Test | 2027-02-07 → 2027-02-09 (+2d) | 2027-02-11 → 2027-02-14 (+3d) | 144.38d → 142.3d |
| 14 | **Upgrade Local 29** |  | 2027-09-21 → 2027-09-20 (-1d) |  |
| 25 | **Road Works** |  | 2027-04-27 → 2027-05-04 (+7d) |  |
| TAEXRDCU290002 | MBC1 layer | 2027-02-10 → 2027-02-17 (+7d) | 2027-02-11 → 2027-02-18 (+7d) | 49.4d → 43.4d |
| TAEXRDCU290003 | BBC Base Course | 2027-02-11 → 2027-02-18 (+7d) | 2027-02-16 → 2027-02-23 (+7d) | 49.4d → 43.4d |
| TAEXRDCU290005 | Precast Concret Kerps | 2027-02-16 → 2027-02-23 (+7d) | 2027-02-28 → 2027-03-07 (+7d) | 49.4d → 43.4d |
| TAEXRDCU290004 | BWC Asphalt Wearing Course with RC | 2027-02-28 → 2027-03-07 (+7d) | 2027-03-03 → 2027-03-10 (+7d) | 83.4d → 77.4d |
| TAEXRDCU290006 | Precast Interlock Works | 2027-04-13 → 2027-04-20 (+7d) | 2027-04-22 → 2027-04-29 (+7d) | 83.4d → 77.4d |
| TAEXRDCU290007 | Stone Paving works | 2027-04-22 → 2027-04-29 (+7d) | 2027-04-25 → 2027-05-02 (+7d) | 83.4d → 77.4d |
| TAEXRDCU290008 | Road Marking | 2027-04-25 → 2027-05-02 (+7d) | 2027-04-26 → 2027-05-03 (+7d) | 83.4d → 77.4d |
| TAEXRDCU290009 | Traffic Sinage | 2027-04-26 → 2027-05-03 (+7d) | 2027-04-27 → 2027-05-04 (+7d) | 83.4d → 77.4d |
| 20 | **Electrical Works** | 2027-07-06 → 2027-07-05 (-1d) | 2027-09-21 → 2027-09-20 (-1d) |  |
| TAEXELCU290001 | Trench Cut off | 2027-07-06 → 2027-07-05 (-1d) | 2027-07-18 → 2027-07-17 (-1d) | -28.35d → -27.25d |
| TAEXELCU290002 | Drawpit and PVC Pipes Installation | 2027-07-18 → 2027-07-17 (-1d) | 2027-07-25 → 2027-07-24 (-1d) | -3.2d → -2.1d |
| TAEXELCU290003 | Road Crossing Ducts | 2027-07-25 → 2027-07-24 (-1d) | 2027-07-28 → 2027-07-27 (-1d) | 6.8d → 7.9d |
| TAEXELCU290006 | Poles RC Foundation | 2027-07-25 → 2027-07-24 (-1d) | 2027-07-29 → 2027-07-28 (-1d) | -3.2d → -2.1d |
| TAEXELCU290004 | Trench Backfilling | 2027-07-28 → 2027-07-27 (-1d) | 2027-08-09 → 2027-08-08 (-1d) | 6.8d → 7.9d |
| TAEXELCU290008 | Lighting Pole Installation with Luminares | 2027-07-29 → 2027-07-28 (-1d) | 2027-08-05 → 2027-08-04 (-1d) | -3.2d → -2.1d |
| TAEXELCU290005 | Cables Pulling | 2027-08-09 → 2027-08-08 (-1d) | 2027-08-14 → 2027-08-12 (-2d) | 6.8d → 7.9d |
| TAEXELCU290007 | Earthing cables | 2027-09-19 → 2027-09-18 (-1d) | 2027-09-21 → 2027-09-20 (-1d) | -25.86d → -24.76d |
| 1 | **Telecommunication Works** | 2027-06-16 → 2027-06-23 (+7d) | 2027-07-24 → 2027-07-31 (+7d) |  |
| TAEXTCCU290001 | Trench Cut off | 2027-06-16 → 2027-06-23 (+7d) | 2027-06-28 → 2027-07-05 (+7d) | -6.61d → -12.61d |
| TAEXTCCU290002 | Drawpit and PVC Pipes Installation | 2027-07-01 → 2027-07-08 (+7d) | 2027-07-08 → 2027-07-15 (+7d) | -9.61d → -15.61d |
| TAEXTCCU290003 | Road Crossing Ducts | 2027-07-08 → 2027-07-15 (+7d) | 2027-07-12 → 2027-07-19 (+7d) | 6.39d → 0.39d |
| TAEXTCCU290004 | Trench Backfilling | 2027-07-12 → 2027-07-19 (+7d) | 2027-07-24 → 2027-07-31 (+7d) | 6.39d → 0.39d |
| 21 | **CCTV Works** | 2027-07-03 → 2027-07-07 (+4d) | 2027-08-14 → 2027-08-18 (+4d) |  |
| TAEXCCCU290001 | Pipe Installation with manhole | 2027-07-03 → 2027-07-07 (+4d) | 2027-07-11 → 2027-07-15 (+4d) | -26.55d → -30.75d |
| TAEXCCCU290002 | CCTV Swiches Lighting panels Installation | 2027-07-11 → 2027-07-15 (+4d) | 2027-07-22 → 2027-07-27 (+5d) | -11.55d → -15.75d |
| TAEXCCCU290003 | Cable laying and connected with Panels | 2027-07-22 → 2027-07-27 (+5d) | 2027-08-02 → 2027-08-07 (+5d) | -1.55d → -5.75d |
| TAEXCCCU290004 | Pole Installation with IP Outdoor CCTV POE Camera | 2027-08-02 → 2027-08-07 (+5d) | 2027-08-14 → 2027-08-18 (+4d) | -1.55d → -5.75d |
| 2 | **Potable Networks** |  | 2027-06-15 → 2027-06-03 (-12d) |  |
| TAEXPTCU290007 | Valve Chamber works | 2027-05-29 → 2027-05-17 (-12d) | 2027-06-15 → 2027-06-03 (-12d) | 53.66d → 63.7d |
| 3 | **TSE Networks** |  | 2027-04-19 → 2027-04-20 (+1d) |  |
| TAEXTSCU290006 | Valve Chamber works | 2027-04-01 → 2027-04-03 (+2d) | 2027-04-19 → 2027-04-20 (+1d) | 92.8d → 91.2d |
| 15 | **Upgrade Local 32** |  | 2027-09-26 → 2027-09-25 (-1d) |  |
| 17 | **Electrical Works** | 2027-03-31 → 2027-03-29 (-2d) | 2027-09-26 → 2027-09-25 (-1d) |  |
| TAEXELCU320001 | Trench Cut off | 2027-03-31 → 2027-03-29 (-2d) | 2027-04-13 → 2027-04-11 (-2d) | -28.35d → -27.25d |
| TAEXELCU320002 | Drawpit and PVC Pipes Installation | 2027-04-13 → 2027-04-11 (-2d) | 2027-04-18 → 2027-04-15 (-3d) | 74.92d → 76.02d |
| TAEXELCU320003 | Road Crossing Ducts | 2027-04-18 → 2027-04-15 (-3d) | 2027-05-02 → 2027-04-29 (-3d) | 77.92d → 79.02d |
| TAEXELCU320006 | Poles RC Foundation | 2027-04-18 → 2027-04-15 (-3d) | 2027-04-26 → 2027-04-24 (-2d) | 74.92d → 76.02d |
| TAEXELCU320008 | Lighting Pole Installation with Luminares | 2027-04-26 → 2027-04-24 (-2d) | 2027-05-06 → 2027-05-04 (-2d) | 74.92d → 76.02d |
| TAEXELCU320004 | Trench Backfilling | 2027-05-02 → 2027-04-29 (-3d) | 2027-05-20 → 2027-05-18 (-2d) | 77.92d → 79.02d |
| TAEXELCU320005 | Cables Pulling | 2027-05-20 → 2027-05-18 (-2d) | 2027-05-25 → 2027-05-23 (-2d) | 77.92d → 79.02d |
| TAEXELCU320007 | Earthing cables | 2027-09-21 → 2027-09-20 (-1d) | 2027-09-26 → 2027-09-25 (-1d) | -25.86d → -24.76d |
| 4 | **Telecommunication Works** | 2027-04-04 → 2027-04-08 (+4d) | 2027-08-18 → 2027-08-25 (+7d) |  |
| TAEXCCCU320001 | Pipe Installation with manhole | 2027-04-04 → 2027-04-08 (+4d) | 2027-04-15 → 2027-04-20 (+5d) | -26.55d → -30.75d |
| TAEXCCCU320002 | CCTV Swiches Lighting panels Installation | 2027-07-08 → 2027-07-15 (+7d) | 2027-07-24 → 2027-07-31 (+7d) | -9.61d → -15.61d |
| TAEXCCCU320003 | Cable laying and connected with Panels | 2027-07-24 → 2027-07-31 (+7d) | 2027-08-04 → 2027-08-11 (+7d) | -5.61d → -11.61d |
| TAEXCCCU320004 | Pole Installation with IP Outdoor CCTV POE Camera | 2027-08-04 → 2027-08-11 (+7d) | 2027-08-18 → 2027-08-25 (+7d) | -5.61d → -11.61d |
| 16 | **Potable Networks** | 2026-11-22 → 2026-11-29 (+7d) |  |  |
| TAEXPTCU320007 | Valve Chamber works | 2026-11-22 → 2026-11-29 (+7d) | 2026-12-10 → 2026-12-17 (+7d) | 105.9d → 110.3d |
| TAEXPTCU320008 | Inspection Test | 2026-12-12 → 2026-12-19 (+7d) | 2026-12-16 → 2026-12-23 (+7d) | 193d → 187d |
| 1 | **TSE Networks** |  | 2027-04-28 → 2027-04-29 (+1d) |  |
| TAEXTSCU320005 | Install Valves with fittings |  | 2027-04-03 → 2027-04-04 (+1d) | 84.8d → 83.2d |
| TAEXTSCU320004 | Backfilling Works for Trench | 2027-03-15 → 2027-03-16 (+1d) | 2027-04-03 → 2027-04-04 (+1d) | 84.8d → 83.2d |
| TAEXTSCU320006 | Valve Chamber works | 2027-04-03 → 2027-04-04 (+1d) | 2027-04-22 → 2027-04-24 (+2d) | 84.8d → 83.2d |

| ID | Task | Start | Finish | Complete | Total float |
| --- | --- | --- | --- | --- | --- |
| TAEXTSCU320007 | Inspection Test | 2027-04-22 → 2027-04-24 (+2d) | 2027-04-28 → 2027-04-29 (+1d) |  | 84.8d → 83.2d |
| 3 | **Storm Networks** | 2027-04-13 → 2027-04-11 (-2d) | 2027-06-26 → 2027-06-23 (-3d) |  |  |
| TAEXSTCU320001 | Excavation works for Trench | 2027-04-13 → 2027-04-11 (-2d) | 2027-04-25 → 2027-04-22 (-3d) |  | 17.92d → 21.02d |
| TAEXSTCU320002 | Bedding Works | 2027-04-25 → 2027-04-22 (-3d) | 2027-04-28 → 2027-04-26 (-2d) |  | 19.92d → 21.02d |
| TAEXSTCU320003 | Install GRP Pipes & Fittings | 2027-04-28 → 2027-04-26 (-2d) | 2027-05-05 → 2027-05-03 (-2d) |  | 19.92d → 21.02d |
| TAEXSTCU320004 | Backfilling Works for Trench | 2027-05-03 → 2027-05-01 (-2d) | 2027-05-23 → 2027-05-20 (-3d) |  | 19.92d → 21.02d |
| TAEXSTCU320005 | Manhole Installation with backfilling | 2027-05-16 → 2027-05-13 (-3d) | 2027-06-03 → 2027-06-01 (-2d) |  | 19.92d → 21.02d |
| TAEXSTCU320006 | Install Catch Basin with UPVC Pipes & Fittings | 2027-06-03 → 2027-06-01 (-2d) | 2027-06-21 → 2027-06-19 (-2d) |  | 19.92d → 21.02d |
| TAEXSTCU320007 | Leakage Test | 2027-06-21 → 2027-06-19 (-2d) | 2027-06-26 → 2027-06-23 (-3d) |  | 41.92d → 43.02d |
| 16 | **Upgrade Local 33** |  | 2027-09-28 → 2027-09-27 (-1d) |  |  |
| 27 | **Road Works** | 2027-04-25 → 2027-05-02 (+7d) | 2027-05-22 → 2027-05-29 (+7d) |  |  |
| TAEXRDCU330002 | Precast Concret Kerps | 2027-04-25 → 2027-05-02 (+7d) | 2027-05-06 → 2027-05-13 (+7d) |  | 62.4d → 56.4d |
| TAEXRDCU330001 | BWC Asphalt Wearing Course with RC | 2027-05-06 → 2027-05-13 (+7d) | 2027-05-08 → 2027-05-15 (+7d) |  | 62.4d → 56.4d |
| TAEXRDCU330003 | Precast Interlock Works | 2027-05-08 → 2027-05-15 (+7d) | 2027-05-17 → 2027-05-24 (+7d) |  | 62.4d → 56.4d |
| TAEXRDCU330004 | Stone Paving works | 2027-05-17 → 2027-05-24 (+7d) | 2027-05-19 → 2027-05-26 (+7d) |  | 62.4d → 56.4d |
| TAEXRDCU330005 | Road Marking | 2027-05-19 → 2027-05-26 (+7d) | 2027-05-20 → 2027-05-27 (+7d) |  | 62.4d → 56.4d |
| TAEXRDCU330006 | Traffic Sinage | 2027-05-20 → 2027-05-27 (+7d) | 2027-05-22 → 2027-05-29 (+7d) |  | 62.4d → 56.4d |
| 18 | **Electrical Works** | 2027-04-13 → 2027-04-11 (-2d) | 2027-09-28 → 2027-09-27 (-1d) |  |  |
| TAEXELCU330001 | Trench Cut off | 2027-04-13 → 2027-04-11 (-2d) | 2027-04-26 → 2027-04-24 (-2d) |  | -28.35d → -27.25d |
| TAEXELCU330002 | Drawpit and PVC Pipes Installation | 2027-04-26 → 2027-04-24 (-2d) | 2027-05-06 → 2027-05-04 (-2d) |  | 66.92d → 68.02d |
| TAEXELCU330003 | Road Crossing Ducts | 2027-05-06 → 2027-05-04 (-2d) | 2027-05-18 → 2027-05-16 (-2d) |  | 71.92d → 73.02d |
| TAEXELCU330006 | Poles RC Foundation | 2027-05-06 → 2027-05-04 (-2d) | 2027-05-11 → 2027-05-09 (-2d) |  | 66.92d → 68.02d |
| TAEXELCU330008 | Lighting Pole Installation with Luminares | 2027-05-11 → 2027-05-09 (-2d) | 2027-05-16 → 2027-05-13 (-3d) |  | 66.92d → 68.02d |
| TAEXELCU330004 | Trench Backfilling | 2027-05-18 → 2027-05-16 (-2d) | 2027-06-02 → 2027-05-31 (-2d) |  | 71.92d → 73.02d |
| TAEXELCU330005 | Cables Pulling | 2027-06-02 → 2027-05-31 (-2d) | 2027-06-06 → 2027-06-03 (-3d) |  | 71.92d → 73.02d |
| TAEXELCU330007 | Earthing cables | 2027-09-26 → 2027-09-25 (-1d) | 2027-09-28 → 2027-09-27 (-1d) |  | -25.86d → -24.76d |
| 1 | **Telecommunication Works** | 2027-04-10 → 2027-04-17 (+7d) | 2027-08-11 → 2027-08-18 (+7d) |  |  |
| TAEXTCCU330001 | Trench Cut off | 2027-04-10 → 2027-04-17 (+7d) | 2027-04-15 → 2027-04-22 (+7d) |  | -9.61d → -15.61d |
| TAEXTCCU330002 | Drawpit and PVC Pipes Installation | 2027-07-24 → 2027-07-31 (+7d) | 2027-07-28 → 2027-08-04 (+7d) |  | -9.61d → -15.61d |
| TAEXTCCU330003 | Road Crossing Ducts | 2027-07-28 → 2027-08-04 (+7d) | 2027-08-01 → 2027-08-08 (+7d) |  | -9.61d → -15.61d |
| TAEXTCCU330004 | Trench Backfilling | 2027-08-01 → 2027-08-08 (+7d) | 2027-08-11 → 2027-08-18 (+7d) |  | -9.61d → -15.61d |
| 17 | **CCTV Works** | 2027-04-15 → 2027-04-20 (+5d) | 2027-08-25 → 2027-08-30 (+5d) |  |  |
| TAEXCCCU330001 | Pipe Installation with manhole | 2027-04-15 → 2027-04-20 (+5d) | 2027-04-25 → 2027-04-29 (+4d) |  | -26.55d → -30.75d |
| TAEXCCCU330002 | CCTV Swiches Lighting panels Installation | 2027-07-22 → 2027-07-27 (+5d) | 2027-08-03 → 2027-08-08 (+5d) |  | -11.55d → -15.75d |
| TAEXCCCU330003 | Cable laying and connected with Panels | 2027-08-03 → 2027-08-08 (+5d) | 2027-08-14 → 2027-08-18 (+4d) |  | -11.55d → -15.75d |
| TAEXCCCU330004 | Pole Installation with IP Outdoor CCTV POE Camera | 2027-08-14 → 2027-08-18 (+4d) | 2027-08-25 → 2027-08-30 (+5d) |  | -11.55d → -15.75d |
| 3 | **TSE Networks** | 2027-03-03 → 2027-03-04 (+1d) | 2027-05-15 → 2027-05-16 (+1d) |  |  |
| TAEXTSCU330001 | Excavation works for Trench | 2027-03-03 → 2027-03-04 (+1d) | 2027-04-01 → 2027-04-03 (+2d) |  | 56.3d → 54.7d |
| TAEXTSCU330002 | Bedding Works | 2027-04-01 → 2027-04-03 (+2d) | 2027-04-04 → 2027-04-05 (+1d) |  | 56.3d → 54.7d |
| TAEXTSCU330003 | Install Pipes & Fittings | 2027-04-04 → 2027-04-05 (+1d) | 2027-04-10 → 2027-04-11 (+1d) |  | 56.3d → 54.7d |
| TAEXTSCU330004 | Backfilling Works for Trench | 2027-04-10 → 2027-04-11 (+1d) | 2027-04-24 → 2027-04-25 (+1d) |  | 70.8d → 69.2d |
| TAEXTSCU330005 | Install Valves with fittings | 2027-04-19 → 2027-04-20 (+1d) | 2027-04-24 → 2027-04-25 (+1d) |  | 70.8d → 69.2d |
| TAEXTSCU330006 | Valve Chamber works | 2027-04-24 → 2027-04-25 (+1d) | 2027-05-11 → 2027-05-12 (+1d) |  | 70.8d → 69.2d |
| TAEXTSCU330007 | Inspection Test | 2027-05-11 → 2027-05-12 (+1d) | 2027-05-15 → 2027-05-16 (+1d) |  | 70.8d → 69.2d |
| 5 | **Storm Networks** |  | 2027-07-06 → 2027-06-30 (-6d) |  |  |
| TAEXSTCU330007 | Leakage Test | 2027-07-03 → 2026-11-05 A (-240d) | 2027-07-06 → 2026-11-08 A (-240d) | 0% → 100% | 32.92d → none |
| TAEXSTCU330004 | Backfilling Works for Trench | 2027-05-09 → 2027-05-01 (-8d) | 2027-05-23 → 2027-05-15 (-8d) |  | 34.02d → 41.12d |
| TAEXSTCU330005 | Manhole Installation with backfilling | 2027-05-22 → 2027-05-13 (-9d) | 2027-06-03 → 2027-05-26 (-8d) |  | 34.02d → 41.12d |
| TAEXSTCU330006 | Install Catch Basin with UPVC Pipes & Fittings | 2027-06-21 → 2027-06-19 (-2d) | 2027-07-03 → 2027-06-30 (-3d) |  | 19.92d → 21.02d |
| 17 | **Pond** |  | 2027-01-11 → 2027-01-18 (+7d) |  |  |
| 21 | **Storm Water Pond** |  | 2027-01-11 → 2027-01-18 (+7d) |  |  |
| TAEXSTCSWP0007 | Excavation works for ponds 7th part |  | 2026-11-16 → 2026-11-23 (+7d) |  | 202.95d → 196.95d |
| TAEXSTCSWP0009 | Riprap Works part 1 |  | 2026-11-17 → 2026-11-24 (+7d) |  | 202.95d → 196.95d |
| TAEXSTCSWP0012 | Outfall structure works |  | 2027-01-11 → 2027-01-18 (+7d) |  | 202.95d → 196.95d |
| TAEXSTCSWP0010 | Riprap Works Part 2 |  | 2026-11-21 → 2026-11-28 (+7d) |  | 202.95d → 196.95d |
| TAEXSTCSWP0011 | Sand Marl Mix Ballast layer | 2026-11-21 → 2026-11-28 (+7d) | 2026-12-05 → 2026-12-12 (+7d) |  | 202.95d → 196.95d |
| 22 | **CLOSE OUT** | 2027-01-23 → 2027-01-30 (+7d) | 2027-10-06 → 2027-10-10 (+4d) |  |  |
| 3 | **Final Testing and Commmisionning** | 2027-01-23 → 2027-01-30 (+7d) | 2027-10-02 → 2027-10-06 (+4d) |  |  |
| 1 | **Final Test & commisionning Zone 1** | 2027-03-02 → 2027-02-28 (-2d) | 2027-07-06 → 2027-07-11 (+5d) |  |  |
| TACOFTFT0007 | Sewerage Networks | 2027-03-02 → 2027-02-28 (-2d) | 2027-03-09 → 2027-03-07 (-2d) |  | 143.58d → 145.82d |
| TACOFTFT0008 | Storm Water Drainage Networks | 2027-03-02 → 2027-02-28 (-2d) | 2027-03-10 → 2027-03-08 (-2d) |  | 138.58d → 140.82d |
| TACOFTFT0006 | TSE Networks | 2027-03-14 → 2027-03-16 (+2d) | 2027-03-18 → 2027-03-21 (+3d) |  | 135.2d → 133.6d |
| TACOFTFT0005 | Potable Water Networks | 2027-04-10 → 2027-04-11 (+1d) |  |  | 112.8d → 112d |
| TACOFTFT0001 | Road Works | 2027-06-02 → 2027-06-01 (-1d) | 2027-06-07 → 2027-06-06 (-1d) |  | 41.32d → 42.92d |
| TACOFTFT0004 | CCTV Networks | 2027-06-28 → 2027-07-03 (+5d) | 2027-07-06 → 2027-07-11 (+5d) |  | 41.45d → 37.25d |
| 2 | **Final Test & commisionning Zone 2** | 2027-01-23 → 2027-01-30 (+7d) | 2027-09-21 → 2027-09-26 (+5d) |  |  |
| TACOFTFT0015 | Sewerage Networks | 2027-01-23 → 2027-01-30 (+7d) | 2027-01-30 → 2027-02-06 (+7d) |  | 155.6d → 149.6d |
| TACOFTFT0016 | Storm Water Drainage Networks | 2027-03-24 → 2027-03-22 (-2d) | 2027-04-01 → 2027-03-30 (-2d) |  | 114.43d → 116.82d |
| TACOFTFT0014 | TSE Networks | 2027-03-31 → 2027-03-27 (-4d) | 2027-04-05 → 2027-03-31 (-5d) |  | 127.58d → 131.82d |
| TACOFTFT0013 | Potable Water Networks | 2027-04-04 → 2027-04-05 (+1d) | 2027-04-08 → 2027-04-10 (+2d) |  | 122.06d → 121.7d |

| ID | Task | Start | Finish | Total float |
| --- | --- | --- | --- | --- |
| TACOFTFT0011 | Telecommunications Networks | 2027-06-16 → 2027-06-15 (-1d) | 2027-06-24 → 2027-06-23 (-1d) | 31.73d → 32.33d |
| TACOFTFT0012 | CCTV Networks | 2027-09-13 → 2027-09-18 (+5d) | 2027-09-21 → 2027-09-26 (+5d) | -24.55d → -28.75d |
| 3 | **Final Test & commisionning Zone 3** | 2027-02-15 → 2027-02-18 (+3d) | 2027-10-02 → 2027-10-06 (+4d) |  |
| TACOFTFT0023 | Sewerage Networks | 2027-02-15 → 2027-02-18 (+3d) | 2027-02-21 → 2027-02-24 (+3d) | 141.38d → 138.05d |
| TACOFTFT0021 | Potable Water Networks | 2027-06-15 → 2027-06-03 (-12d) | 2027-06-21 → 2027-06-09 (-12d) | 64.66d → 74.7d |
| TACOFTFT0024 | Storm Water Drainage Networks | 2027-07-24 → 2027-07-19 (-5d) | 2027-08-01 → 2027-07-27 (-5d) | 17.92d → 21.02d |
| TACOFTFT0017 | Road Works | 2027-08-01 → 2027-07-29 (-3d) | 2027-08-04 → 2027-08-02 (-2d) | 1.39d → 3.14d |
| TACOFTFT0019 | Telecommunications Networks | 2027-08-11 → 2027-08-18 (+7d) | 2027-08-19 → 2027-08-26 (+7d) | -9.61d → -15.61d |
| TACOFTFT0018 | Electrical NetWorks | 2027-09-03 → 2027-09-02 (-1d) | 2027-09-11 → 2027-09-09 (-2d) | -28.35d → -27.25d |
| TACOFTFT0020 | CCTV Networks | 2027-09-21 → 2027-09-26 (+5d) | 2027-10-02 → 2027-10-06 (+4d) | -24.55d → -28.75d |
| 2 | **AS BUILT DRAWINGS** | 2027-02-24 → 2027-02-22 (-2d) | 2027-09-18 → 2027-09-21 (+3d) |  |
| 1 | **AS BUILT DRAWINGS Zone 1** | 2027-03-02 → 2027-02-28 (-2d) | 2027-09-18 → 2027-09-21 (+3d) |  |
| TACOFTAD0007 | Sewerage Networks | 2027-03-02 → 2027-02-28 (-2d) | 2027-03-14 → 2027-03-11 (-3d) | 133.58d → 135.82d |
| TACOFTAD0005 | Potable Water Networks | 2027-06-03 → 2027-05-23 (-11d) | 2027-06-15 → 2027-06-03 (-12d) | 53.66d → 63.7d |
| TACOFTAD0006 | TSE Networks | 2027-05-31 → 2027-06-02 (+2d) | 2027-06-12 → 2027-06-14 (+2d) | 56.3d → 54.7d |
| TACOFTAD0008 | Storm Water Drainage Networks | 2027-07-12 → 2027-07-07 (-5d) | 2027-07-24 → 2027-07-19 (-5d) | 20.92d → 24.02d |
| TACOFTAD0001 | Road Works | 2027-08-04 → 2027-08-02 (-2d) | 2027-08-08 → 2027-08-05 (-3d) | 1.39d → 3.14d |
| TACOFTAD0003 | Telecommunications Networks | 2027-08-19 → 2027-08-26 (+7d) | 2027-08-28 → 2027-09-03 (+6d) | -9.61d → -15.61d |
| TACOFTAD0002 | Electrical NetWorks | 2027-09-11 → 2027-09-09 (-2d) | 2027-09-18 → 2027-09-16 (-2d) | -28.35d → -27.25d |
| TACOFTAD0004 | CCTV Networks | 2027-09-12 → 2027-09-16 (+4d) | 2027-09-16 → 2027-09-21 (+5d) | -27.55d → -31.75d |
| 2 | **AS BUILT DRAWINGS Zone 2** | 2027-02-24 → 2027-02-22 (-2d) | 2027-09-18 → 2027-09-21 (+3d) |  |
| TACOFTAD0015 | Sewerage Networks | 2027-02-24 → 2027-02-22 (-2d) | 2027-03-14 → 2027-03-11 (-3d) | 133.58d → 135.82d |
| TACOFTAD0013 | Potable Water Networks | 2027-06-03 → 2027-05-23 (-11d) | 2027-06-15 → 2027-06-03 (-12d) | 53.66d → 63.7d |
| TACOFTAD0014 | TSE Networks | 2027-05-31 → 2027-06-02 (+2d) | 2027-06-12 → 2027-06-14 (+2d) | 56.3d → 54.7d |
| TACOFTAD0016 | Storm Water Drainage Networks | 2027-07-06 → 2027-07-01 (-5d) | 2027-07-24 → 2027-07-19 (-5d) | 20.92d → 24.02d |
| TACOFTAD0009 | Road Works | 2027-08-08 → 2027-08-05 (-3d) | 2027-08-11 → 2027-08-09 (-2d) | 1.39d → 3.14d |
| TACOFTAD0011 | Telecommunications Networks | 2027-08-19 → 2027-08-26 (+7d) | 2027-08-28 → 2027-09-03 (+6d) | -9.61d → -15.61d |
| TACOFTAD0010 | Electrical NetWorks | 2027-09-09 → 2027-09-08 (-1d) | 2027-09-18 → 2027-09-16 (-2d) | -28.35d → -27.25d |
| TACOFTAD0012 | CCTV Networks | 2027-09-12 → 2027-09-16 (+4d) | 2027-09-16 → 2027-09-21 (+5d) | -27.55d → -31.75d |
| 3 | **AS BUILT DRAWINGS Zone 3** | 2027-03-02 → 2027-02-28 (-2d) | 2027-09-18 → 2027-09-21 (+3d) |  |
| TACOFTAD0023 | Sewerage Networks | 2027-03-02 → 2027-02-28 (-2d) | 2027-03-14 → 2027-03-11 (-3d) | 133.58d → 135.82d |
| TACOFTAD0021 | Potable Water Networks | 2027-06-03 → 2027-05-23 (-11d) | 2027-06-15 → 2027-06-03 (-12d) | 53.66d → 63.7d |
| TACOFTAD0022 | TSE Networks | 2027-05-31 → 2027-06-02 (+2d) | 2027-06-12 → 2027-06-14 (+2d) | 56.3d → 54.7d |
| TACOFTAD0024 | Storm Water Drainage Networks | 2027-07-12 → 2027-07-07 (-5d) | 2027-07-24 → 2027-07-19 (-5d) | 20.92d → 24.02d |
| TACOFTAD0017 | Road Works | 2027-08-11 → 2027-08-09 (-2d) | 2027-08-15 → 2027-08-12 (-3d) | 1.39d → 3.14d |
| TACOFTAD0019 | Telecommunications Networks | 2027-08-19 → 2027-08-26 (+7d) | 2027-08-28 → 2027-09-03 (+6d) | -9.61d → -15.61d |
| TACOFTAD0018 | Electrical NetWorks | 2027-09-09 → 2027-09-08 (-1d) | 2027-09-18 → 2027-09-16 (-2d) | -28.35d → -27.25d |
| TACOFTAD0020 | CCTV Networks | 2027-09-11 → 2027-09-15 (+4d) | 2027-09-16 → 2027-09-21 (+5d) | -27.55d → -31.75d |
| 1 | **DEMOBILIZATION** | 2027-09-18 → 2027-09-21 (+3d) | 2027-10-06 → 2027-10-10 (+4d) |  |
| TAPCDZ00000001 | Demobilization Manpower | 2027-09-18 → 2027-09-21 (+3d) | 2027-09-25 → 2027-09-28 (+3d) | -28.35d → -31.75d |
| TAPCDZ00000002 | Remove Offices and Structures | 2027-09-25 → 2027-09-28 (+3d) | 2027-09-30 → 2027-10-04 (+4d) | -28.35d → -31.75d |
| TAPCDZ00000022 | Restore Ground Surfaces | 2027-09-29 → 2027-10-03 (+4d) | 2027-10-06 → 2027-10-10 (+4d) | -28.35d → -31.75d |
| TAPCDZ00000012 | Demobilize Equipment from Site | 2027-09-30 → 2027-10-04 (+4d) | 2027-10-06 → 2027-10-10 (+4d) | -28.35d → -31.75d |
| TAPCDZ00000032 | Final Handover | 2027-10-06 → 2027-10-10 (+4d) | 2027-10-06 → 2027-10-10 (+4d) | -28.35d → -31.75d |

## Version 8 (data date 2026-11-16, saved 2026-11-18, file 16-11-2026.xer)

Last finish 2027-10-10 → 2027-10-04 (-6d). Complete tasks 658 → 681.

Changed:

| ID | Task | Start | Finish | Complete | Total float | Predecessors |
| --- | --- | --- | --- | --- | --- | --- |
| GENERAL | **MILESTONS** |  | 2027-10-10 → 2027-10-04 (-6d) |  |  |  |
| 2 | **CONTRACTUAL MILESTONES** |  | 2027-10-10 → 2027-10-04 (-6d) |  |  |  |
| TAGNCM0003 | Project finish | 2027-10-10 → 2027-10-04 (-6d) | 2027-10-10 → 2027-10-04 (-6d) |  | -31.75d → -26.25d |  |
| 1 | **NET WORK MILESTONES** |  | 2027-10-06 → 2027-10-04 (-2d) |  |  |  |
| TAGNML0008 | Start CCTV Works | 2026-11-09 → 2026-11-16 (+7d) | 2026-11-09 → 2026-11-16 (+7d) |  | -26d → -22d |  |
| TAGNML0019 | Finish Sewerage Networks | 2027-03-11 → 2027-03-13 (+2d) | 2027-03-11 → 2027-03-13 (+2d) |  | 151.82d → 150.5d |  |
| TAGNML0018 | Finish TSE Networks | 2027-06-10 → 2027-05-18 (-23d) | 2027-06-10 → 2027-05-18 (-23d) |  | 73.43d → 93.7d |  |
| TAGNML0017 | Finish Potable Water Networks | 2027-06-09 → 2027-05-26 (-14d) | 2027-06-09 → 2027-05-26 (-14d) |  | 74.7d → 86.5d |  |
| TAGNML0020 | Finish Storm Water Drainage Networks | 2027-07-19 → 2027-07-03 (-16d) | 2027-07-19 → 2027-07-03 (-16d) |  | 40.02d → 54.89d |  |
| TAGNML0032 | Finish works for Amana Road | 2027-07-21 → 2027-07-27 (+6d) | 2027-07-21 → 2027-07-27 (+6d) |  | 38.91d → 33.96d |  |
| TAGNML0015 | Finish Teleommunications Works | 2027-09-03 → 2027-09-08 (+5d) | 2027-09-03 → 2027-09-08 (+5d) |  | 0.39d → -4.11d |  |
| TAGNML0014 | Finish Electrical Works | 2027-10-02 → 2027-09-11 (-21d) | 2027-10-02 → 2027-09-11 (-21d) |  | -24.76d → -6.39d |  |
| TAGNML0016 | Finish CCTV Works | 2027-10-06 → 2027-09-30 (-6d) | 2027-10-06 → 2027-09-30 (-6d) |  | -28.75d → -23.25d |  |
| TAGNML0013 | Finish Road Works | 2027-09-29 → 2027-10-04 (+5d) | 2027-09-29 → 2027-10-04 (+5d) |  | -22.25d → -26.25d |  |
| 4 | **ZONES MILESTONES** |  | 2027-06-22 → 2027-06-28 (+6d) |  |  |  |
| TAGNZM0006 | Finish Zone 3 | 2027-06-03 → 2027-05-20 (-14d) | 2027-06-03 → 2027-05-20 (-14d) |  | 79.7d → 91.5d |  |
| TAGNZM0004 | Finish Zone 1 | 2027-06-01 → 2027-06-07 (+6d) | 2027-06-01 → 2027-06-07 (+6d) |  | 81.92d → 76.29d |  |
| TAGNZM0005 | Finish Zone 2 | 2027-06-22 → 2027-06-28 (+6d) | 2027-06-22 → 2027-06-28 (+6d) |  | 38.91d → 33.96d |  |
| 3 | **PRELIMINARY SUBMITTALS** |  | 2026-12-08 → 2026-12-15 (+7d) |  |  |  |
| TAGNPS0002 | Shop drawing complete |  | 2026-12-08 → 2026-12-15 (+7d) |  | -2.4d → 15.97d |  |
| TAGNMZ9 | Office Operation part 01 |  |  | 36% → 37% | 0d → 0.02d |  |
| 17 | **PROCUREMENT** |  | 2027-09-29 → 2027-10-04 (+5d) |  |  |  |
| 17 | **Material Fabrication and Delivery** |  | 2027-09-29 → 2027-10-04 (+5d) |  |  |  |
| 1 | **Material Fabrication and Delivery for Road Works** |  | 2027-09-29 → 2027-10-04 (+5d) |  |  |  |
| TAPQDVRD00011 | ABC Delivery to Site Part 01 |  | 2026-12-07 → 2026-12-14 (+7d) |  | -27.25d → -26.25d |  |
| TAPQDVRD00021 | BBC Base Course Delivery to Site Part 01 |  | 2027-06-10 → 2027-06-16 (+6d) | 36% → 39% | 28.91d → 23.96d |  |
| TAPQDVRD00041 | Precast Concrete Curbstone Delivery to Site part 01 |  | 2027-07-24 → 2027-07-28 (+4d) |  | -22.25d → -26.25d | TAPQDVRD00011 FS+145d, TAPQDVRD0004 → TAPQDVRD00011 FS+143d, TAPQDVRD0004 |
| TAPQDVRD0003 | BWC Asphalt Wearing Course Delivery to Site | 2027-06-10 → 2027-06-16 (+6d) | 2027-07-21 → 2027-07-27 (+6d) |  | 29.91d → 24.96d |  |
| TAPQDVRD00081 | Marking for Road delivery to site Part 01 | 2027-06-10 → 2027-06-16 (+6d) | 2027-06-16 → 2027-06-22 (+6d) |  | 28.91d → 23.96d |  |
| TAPQDVRD00091 | Trafic Sinage delivery to site Part 01 | 2027-07-21 → 2027-07-27 (+6d) | 2027-08-01 → 2027-08-07 (+6d) |  | 29.91d → 24.96d |  |
| TAPQDVRD0005 | Precast Concrete Interlocking Delivery to Site | 2027-08-15 → 2027-08-19 (+4d) | 2027-09-29 → 2027-10-04 (+5d) |  | -22.25d → -26.25d |  |
| 10 | **Material Fabrication and Delivery for Electrical Works** |  | 2027-04-07 → 2027-04-12 (+5d) |  |  |  |
| TAPQDVEL0002 | cables (LV,MV )Delivery to Site) |  | 2027-01-20 → 2027-01-26 (+6d) |  | -8.87d → -13.37d |  |
| TAPQDVEL00011 | Pipes ,Fittings Delivery to Site Part 01 |  | 2026-11-11 → 2026-11-17 (+6d) | 89% → 95% | -31.75d → -26.25d |  |
| TAPQDVEL0003 | Poles & Luminares Delivery to Site |  | 2027-03-03 → 2027-03-08 (+5d) |  | -8.87d → -13.37d |  |
| TAPQDVEL0005 | Pre cast Drawpits and Pole Foundation Delivery |  | 2027-04-07 → 2027-04-12 (+5d) | 11% → 24% | -8.87d → -13.37d |  |
| 11 | **Material Fabrication and Delivery for Telecommunication** |  | 2026-11-15 → 2026-11-21 (+6d) |  |  |  |
| TAPQDVTC0001 | Telecommunication Material (Pipes,,ets) Delivery |  | 2026-11-15 → 2026-11-21 (+6d) |  | -31.75d → -26.25d |  |
| 12 | **Material Fabrication and Delivery for CCTV Networks** |  | 2026-11-25 → 2026-11-28 (+3d) |  |  |  |
| TAPQDVCC0001 | CCTV Material Cabls,Camera,Devices,ets) Delivery |  | 2026-11-25 → 2026-11-28 (+3d) | 85% → 90% | -31.75d → -26.25d |  |
| 15 | **Material Fabrication and Delivery for Sewerage Networks** |  | 2026-12-19 → 2026-12-26 (+7d) |  |  |  |
| TAPQDVSW00021 | Fiberglass Manholes,ets) Delivery Part 01 | 2026-11-09 → 2026-11-16 (+7d) | 2026-12-19 → 2026-12-26 (+7d) |  | 14.45d → 8.45d |  |
| 16 | **Material Fabrication and Delivery for Storm Networks** |  | 2026-11-29 → 2026-12-06 (+7d) |  |  |  |
| TAPQDVST0009 | Catchbasin Delivery to Site |  | 2026-11-21 → 2026-11-22 (+1d) | 83% → 90% | 40.8d → 39d |  |
| TAPQDVST00071 | RIprab,Sand,Marl gravel Delivery for Ponds part 01 |  | 2026-11-18 → 2026-11-25 (+7d) |  | 200.4d → 194.4d |  |
| TAPQDVST00061 | Manholes,ets Delivery part 01 |  | 2026-11-29 → 2026-12-06 (+7d) |  | 31.81d → 25.81d |  |
| 1 | **CONSTRUCTION WORKS** |  | 2027-10-02 → 2027-09-11 (-21d) |  |  |  |
| 9 | **ZONE 1** |  | 2027-10-02 → 2027-09-11 (-21d) |  |  |  |
| 1 | **Collector Road 02** |  | 2027-06-01 → 2027-06-07 (+6d) |  |  |  |
| 10 | **Road Works** |  | 2027-06-01 → 2027-06-07 (+6d) |  |  |  |
| TAEXRDCC020004 | ABC aggregate Base Course Works |  | 2027-04-12 → 2027-04-21 (+9d) | 85% → 98% | 28.91d → 23.96d |  |
| TAEXRDCC020005 | MBC1 layer |  | 2027-04-13 → 2027-04-21 (+8d) | 50% → 55% | 28.91d → 23.96d |  |
| TAEXRDCC020006 | BBC Base Course |  | 2027-04-15 → 2027-04-24 (+9d) | 38% → 48% | 28.91d → 23.96d |  |
| TAEXRDCC0200021 | Backfilling Works for Road Part 01 |  | 2027-04-04 → 2027-04-14 (+10d) |  | 28.91d → 23.96d |  |
| TAEXRDCC0200031 | Subgrade Works Part 01 |  | 2027-04-10 → 2027-04-21 (+11d) |  | 28.91d → 23.96d |  |
| TAEXRDCC020008 | Precast Concret Kerps |  | 2027-04-27 → 2027-05-03 (+6d) | 15% → 29% | 38.92d → 33.29d |  |
| TAEXRDCC020007 | BWC Asphalt Wearing Course with RC | 2027-04-27 → 2027-05-03 (+6d) | 2027-04-29 → 2027-05-05 (+6d) |  | 42.92d → 37.29d |  |
| TAEXRDCC020009 | Precast Interlock Works | 2027-04-29 → 2027-05-05 (+6d) | 2027-05-20 → 2027-05-26 (+6d) |  | 42.92d → 37.29d |  |
| TAEXRDCC020010 | Stone Paving works | 2027-05-20 → 2027-05-26 (+6d) | 2027-05-29 → 2027-06-03 (+5d) |  | 42.92d → 37.29d |  |
| TAEXRDCC020011 | Road Marking | 2027-05-29 → 2027-06-03 (+5d) | 2027-05-31 → 2027-06-06 (+6d) |  | 42.92d → 37.29d |  |
| TAEXRDCC020012 | Traffic Sinage | 2027-05-31 → 2027-06-06 (+6d) | 2027-06-01 → 2027-06-07 (+6d) |  | 42.92d → 37.29d |  |
| 11 | **Electrical Works** |  | 2027-04-28 → 2027-05-03 (+5d) |  |  |  |
| TAEXELCC020001 | Trench Cut off | 2026-12-19 → 2026-12-26 (+7d) | 2027-01-11 → 2027-01-18 (+7d) |  | 66.81d → 65.56d |  |
| TAEXELCC020004 | Trench Backfilling | 2027-02-24 → 2027-03-08 (+12d) | 2027-03-17 → 2027-03-29 (+12d) |  | 28.91d → 23.96d |  |
| TAEXELCC020005 | Cables Pulling | 2027-03-17 → 2027-03-29 (+12d) | 2027-03-27 → 2027-04-07 (+11d) |  | 28.91d → 23.96d |  |
| TAEXELCC020006 | Poles RC Foundation | 2027-04-07 → 2027-04-12 (+5d) | 2027-04-14 → 2027-04-19 (+5d) |  | 50.65d → 46.15d |  |
| TAEXELCC020007 | Earthing cables | 2027-04-14 → 2027-04-19 (+5d) | 2027-04-26 → 2027-05-01 (+5d) |  | 50.65d → 46.15d |  |
| TAEXELCC020008 | Lighting Pole Installation with Luminares | 2027-04-14 → 2027-04-19 (+5d) | 2027-04-28 → 2027-05-03 (+5d) |  | 57.65d → 53.15d |  |
| 12 | **Telecommunication Works** |  | 2027-04-28 → 2027-05-03 (+5d) |  |  |  |
| TAEXTCCC020001 | Trench Cut off | 2026-11-11 → 2026-11-17 (+6d) | 2026-12-05 → 2026-12-10 (+5d) |  | -15.61d → -20.11d |  |

| ID | Task | Start | Finish | Complete | Total float |
| --- | --- | --- | --- | --- | --- |
| TAEXTCCC020004 | Trench Backfilling | 2027-04-07 → 2027-04-12 (+5d) | 2027-04-28 → 2027-05-03 (+5d) |  | 87.65d → 83.15d |
| 13 | **CCTV Works** | 2027-03-16 → 2027-03-10 (-6d) | 2027-05-25 → 2027-05-19 (-6d) |  |  |
| TAEXCCCC020001 | Pipe Installation with manhole | 2027-03-16 → 2027-03-10 (-6d) | 2027-03-28 → 2027-03-22 (-6d) |  | -31.75d → -26.25d |
| TAEXCCCC020002 | CCTV Swiches Lighting panels Installation | 2027-03-28 → 2027-03-22 (-6d) | 2027-04-18 → 2027-04-12 (-6d) |  | -31.75d → -26.25d |
| TAEXCCCC020003 | Cable laying and connected with Panels | 2027-04-18 → 2027-04-12 (-6d) | 2027-05-04 → 2027-04-28 (-6d) |  | 67.25d → 72.75d |
| TAEXCCCC020004 | Pole Installation with IP Outdoor CCTV POE Camera | 2027-05-04 → 2027-04-28 (-6d) | 2027-05-25 → 2027-05-19 (-6d) |  | 67.25d → 72.75d |
| 2 | **Collector Road 03** |  | 2027-05-23 → 2027-05-25 (+2d) |  |  |
| 10 | **Road Works** |  | 2027-05-12 → 2027-05-18 (+6d) |  |  |
| TAEXRDCC030007 | BWC Asphalt Wearing Course with RC | 2027-04-27 → 2027-05-03 (+6d) | 2027-04-29 → 2027-05-05 (+6d) |  | 51.92d → 46.29d |
| TAEXRDCC030009 | Precast Interlock Works | 2027-04-29 → 2027-05-05 (+6d) | 2027-05-06 → 2027-05-12 (+6d) |  | 59.92d → 54.29d |
| TAEXRDCC030010 | Stone Paving works | 2027-05-06 → 2027-05-12 (+6d) | 2027-05-09 → 2027-05-15 (+6d) |  | 59.92d → 54.29d |
| TAEXRDCC030011 | Road Marking | 2027-05-09 → 2027-05-15 (+6d) | 2027-05-10 → 2027-05-16 (+6d) |  | 59.92d → 54.29d |
| TAEXRDCC030012 | Traffic Sinage | 2027-05-10 → 2027-05-16 (+6d) | 2027-05-12 → 2027-05-18 (+6d) |  | 59.92d → 54.29d |
| 1 | **Electrical Works** |  | 2027-05-19 → 2027-05-25 (+6d) |  |  |
| TAEXELCC0300011 | Trench Cut off Part 01 | 2026-12-07 → 2026-12-14 (+7d) | 2026-12-19 → 2026-12-26 (+7d) |  | -27.25d → -8.88d |
| TAEXELCC030005 | Cables Pulling | 2027-04-27 → 2027-05-03 (+6d) | 2027-05-02 → 2027-05-08 (+6d) |  | 38.92d → 33.29d |
| TAEXELCC0300041 | Trench Backfilling Part 01 | 2027-05-02 → 2027-05-08 (+6d) | 2027-05-06 → 2027-05-12 (+6d) |  | 38.92d → 33.29d |
| TAEXELCC030006 | Poles RC Foundation | 2027-05-06 → 2027-05-12 (+6d) | 2027-05-10 → 2027-05-16 (+6d) |  | 38.92d → 33.29d |
| TAEXELCC030007 | Earthing cables | 2027-05-10 → 2027-05-16 (+6d) | 2027-05-12 → 2027-05-18 (+6d) |  | 38.92d → 33.29d |
| TAEXELCC030008 | Lighting Pole Installation with Luminares | 2027-05-10 → 2027-05-16 (+6d) | 2027-05-19 → 2027-05-25 (+6d) |  | 69.92d → 64.29d |
| 2 | **Telecommunication Works** | 2026-12-28 → 2027-01-03 (+6d) | 2027-05-02 → 2027-05-06 (+4d) |  |  |
| TAEXTCCC030001 | Trench Cut off | 2026-12-28 → 2027-01-03 (+6d) | 2027-01-09 → 2027-01-14 (+5d) |  | -15.61d → -20.11d |
| TAEXTCCC030002 | Drawpit and PVC Pipes Installation | 2027-04-07 → 2027-04-12 (+5d) | 2027-04-15 → 2027-04-20 (+5d) |  | -8.87d → -13.37d |
| TAEXTCCC030003 | Road Crossing Ducts | 2027-04-15 → 2027-04-20 (+5d) | 2027-04-18 → 2027-04-22 (+4d) |  | 84.65d → 80.15d |
| TAEXTCCC030004 | Trench Backfilling | 2027-04-18 → 2027-04-22 (+4d) | 2027-05-02 → 2027-05-06 (+4d) |  | 84.65d → 80.15d |
| 3 | **CCTV Works** | 2026-11-15 → 2026-11-21 (+6d) | 2027-05-23 → 2027-05-17 (-6d) |  |  |
| TAEXCCCC030001 | Pipe Installation with manhole | 2026-11-15 → 2026-11-21 (+6d) | 2026-11-23 → 2026-11-29 (+6d) |  | -31.75d → -26.25d |
| TAEXCCCC030002 | CCTV Swiches Lighting panels Installation | 2027-04-18 → 2027-04-12 (-6d) | 2027-05-02 → 2027-04-26 (-6d) |  | -31.75d → -26.25d |
| TAEXCCCC030003 | Cable laying and connected with Panels | 2027-05-02 → 2027-04-26 (-6d) | 2027-05-11 → 2027-05-05 (-6d) |  | 69.25d → 74.75d |
| TAEXCCCC030004 | Pole Installation with IP Outdoor CCTV POE Camera | 2027-05-11 → 2027-05-05 (-6d) | 2027-05-23 → 2027-05-17 (-6d) |  | 69.25d → 74.75d |
| 8 | **Upgrade local 21** |  | 2027-06-20 → 2027-06-24 (+4d) |  |  |
| 22 | **Road Works** | 2027-04-27 → 2027-05-03 (+6d) | 2027-05-27 → 2027-06-02 (+6d) |  |  |
| TAEXRDCU210002 | Precast Concret Kerps | 2027-04-27 → 2027-05-03 (+6d) | 2027-05-08 → 2027-05-13 (+5d) |  | 46.92d → 41.29d |
| TAEXRDCU210001 | BWC Asphalt Wearing Course with RC | 2027-05-08 → 2027-05-13 (+5d) | 2027-05-09 → 2027-05-15 (+6d) |  | 46.92d → 41.29d |
| TAEXRDCU210003 | Precast Interlock Works | 2027-05-09 → 2027-05-15 (+6d) | 2027-05-17 → 2027-05-23 (+6d) |  | 46.92d → 41.29d |
| TAEXRDCU210004 | Stone Paving works | 2027-05-17 → 2027-05-23 (+6d) | 2027-05-23 → 2027-05-29 (+6d) |  | 46.92d → 41.29d |
| TAEXRDCU210005 | Road Marking | 2027-05-23 → 2027-05-29 (+6d) | 2027-05-24 → 2027-05-30 (+6d) |  | 46.92d → 41.29d |
| TAEXRDCU210006 | Traffic Sinage | 2027-05-24 → 2027-05-30 (+6d) | 2027-05-27 → 2027-06-02 (+6d) |  | 46.92d → 41.29d |
| 13 | **Electrical Works** | 2026-12-19 → 2026-12-26 (+7d) | 2027-06-20 → 2027-06-24 (+4d) |  |  |
| TAEXELCU210001 | Trench Cut off | 2026-12-19 → 2026-12-26 (+7d) | 2027-01-03 → 2027-01-10 (+7d) |  | -27.25d → -8.88d |
| TAEXELCU210002 | Drawpit and PVC Pipes Installation | 2027-04-21 → 2027-04-26 (+5d) | 2027-05-05 → 2027-05-10 (+5d) |  | 14.65d → 10.15d |
| TAEXELCU210003 | Road Crossing Ducts | 2027-05-05 → 2027-05-10 (+5d) | 2027-05-12 → 2027-05-17 (+5d) |  | 14.65d → 10.15d |
| TAEXELCU210006 | Poles RC Foundation | 2027-05-05 → 2027-05-10 (+5d) | 2027-05-15 → 2027-05-19 (+4d) |  | 36.65d → 32.15d |
| TAEXELCU210004 | Trench Backfilling | 2027-05-12 → 2027-05-17 (+5d) | 2027-06-02 → 2027-06-07 (+5d) |  | 14.65d → 10.15d |
| TAEXELCU210008 | Lighting Pole Installation with Luminares | 2027-05-15 → 2027-05-19 (+4d) | 2027-05-26 → 2027-05-31 (+5d) |  | 63.65d → 59.15d |
| TAEXELCU210005 | Cables Pulling | 2027-06-02 → 2027-06-07 (+5d) | 2027-06-09 → 2027-06-14 (+5d) |  | 14.65d → 10.15d |
| TAEXELCU210007 | Earthing cables | 2027-06-09 → 2027-06-14 (+5d) | 2027-06-14 → 2027-06-19 (+5d) |  | 14.65d → 10.15d |
| TAEXELCU210009 | Install Substation & RMU | 2027-06-09 → 2027-06-14 (+5d) | 2027-06-20 → 2027-06-24 (+4d) |  | 43.65d → 39.15d |
| 1 | **Telecommunication Works** | 2027-01-09 → 2027-01-14 (+5d) | 2027-05-27 → 2027-06-01 (+5d) |  |  |
| TAEXTCCU210001 | Trench Cut off | 2027-01-09 → 2027-01-14 (+5d) | 2027-01-25 → 2027-01-31 (+6d) |  | -15.61d → -20.11d |
| TAEXTCCU210002 | Drawpit and PVC Pipes Installation | 2027-04-15 → 2027-04-20 (+5d) | 2027-04-29 → 2027-05-04 (+5d) |  | -8.87d → -13.37d |
| TAEXTCCU210003 | Road Crossing Ducts | 2027-04-29 → 2027-05-04 (+5d) | 2027-05-06 → 2027-05-11 (+5d) |  | 62.65d → 58.15d |
| TAEXTCCU210004 | Trench Backfilling | 2027-05-06 → 2027-05-11 (+5d) | 2027-05-27 → 2027-06-01 (+5d) |  | 62.65d → 58.15d |
| 10 | **CCTV Works** | 2026-11-23 → 2026-11-29 (+6d) | 2027-06-20 → 2027-06-14 (-6d) |  |  |
| TAEXCCCU210001 | Pipe Installation with manhole | 2026-11-23 → 2026-11-29 (+6d) | 2026-12-09 → 2026-12-15 (+6d) |  | -31.75d → -26.25d |
| TAEXCCCU210002 | CCTV Swiches Lighting panels Installation | 2027-05-02 → 2027-04-26 (-6d) | 2027-05-20 → 2027-05-15 (-5d) |  | -31.75d → -26.25d |
| TAEXCCCU210003 | Cable laying and connected with Panels | 2027-05-20 → 2027-05-15 (-5d) | 2027-06-03 → 2027-05-29 (-5d) |  | 45.25d → 50.75d |
| TAEXCCCU210004 | Pole Installation with IP Outdoor CCTV POE Camera | 2027-06-03 → 2027-05-29 (-5d) | 2027-06-20 → 2027-06-14 (-6d) |  | 45.25d → 50.75d |
| 2 | **Potable Networks** |  | 2027-04-10 → 2027-04-08 (-2d) |  |  |
| TAEXPTCU210001 | Excavation works for Trench |  | 2026-11-24 → 2026-11-29 (+5d) | 87% → 95% | 63.7d → 75.5d |
| TAEXPTCU210005 | Install Valves with fittings |  | 2027-03-13 → 2027-03-20 (+7d) | 15% → 40% | 100d → 101.2d |
| TAEXPTCU210007 | Valve Chamber works |  | 2027-04-04 → 2027-04-03 (-1d) | 15% → 40% | 100d → 101.2d |
| TAEXPTCU210002 | Bedding Works |  | 2027-01-18 → 2027-01-24 (+6d) | 87% → 90% | 128.79d → 130.5d |
| TAEXPTCU210003 | Install Pipes & Fittings |  | 2027-02-06 → 2027-02-13 (+7d) | 87% → 90% | 114.05d → 115.7d |
| TAEXPTCU210006 | Install fire hydrent |  | 2027-03-20 → 2027-03-23 (+3d) | 30% → 70% | 100d → 101.2d |
| TAEXPTCU210004 | Backfilling Works for Trench | 2027-02-22 → 2027-03-01 (+7d) | 2027-03-13 → 2027-03-20 (+7d) |  | 100d → 101.2d |
| TAEXPTCU210008 | Inspection Test | 2027-04-05 → 2027-04-03 (-2d) | 2027-04-10 → 2027-04-08 (-2d) |  | 100d → 101.2d |
| 3 | **TSE Networks** |  | 2027-03-16 → 2027-03-23 (+7d) |  |  |
| TAEXTSCU210005 | Install Valves with fittings |  | 2027-02-22 → 2027-03-01 (+7d) |  | 108d → 106d |
| TAEXTSCU210006 | Valve Chamber works |  | 2027-03-10 → 2027-03-17 (+7d) |  | 108d → 106d |

| ID | Task | Start | Finish | Complete | Total float |
| --- | --- | --- | --- | --- | --- |
| TAEXTSCU210001 | Excavation works for Trench | 2026-12-12 → 2026-12-19 (+7d) | 2027-01-14 → 2027-01-21 (+7d) |  | 54.7d → 70.7d |
| TAEXTSCU210002 | Bedding Works | 2027-01-14 → 2027-01-21 (+7d) | 2027-01-17 → 2027-01-24 (+7d) |  | 100d → 101.2d |
| TAEXTSCU210003 | Install Pipes & Fittings | 2027-01-17 → 2027-01-24 (+7d) | 2027-02-03 → 2027-02-10 (+7d) |  | 100d → 101.2d |
| TAEXTSCU210004 | Backfilling Works for Trench | 2027-02-03 → 2027-02-10 (+7d) | 2027-02-22 → 2027-03-01 (+7d) |  | 100d → 101.2d |
| TAEXTSCU210007 | Inspection Test | 2027-03-10 → 2027-03-17 (+7d) | 2027-03-16 → 2027-03-23 (+7d) |  | 116.6d → 110.6d |
| 4 | **Sewerage Networks** |  | 2026-12-23 → 2026-12-29 (+6d) |  |  |
| TAEXSWCU210001 | Excavation works for Trench |  | 2026-11-18 → 2026-11-13 A (-5d) | 95% → 100% | 139.3d → none |
| TAEXSWCU210002 | Bedding Works |  | 2026-11-18 → 2026-11-14 A (-4d) | 95% → 100% | 195.8d → none |
| TAEXSWCU210003 | Install GRP Pipes & Fittings |  | 2026-11-19 → 2026-11-15 A (-4d) | 95% → 100% | 195.8d → none |
| TAEXSWCU210005 | Manhole Installation with backfilling |  | 2026-12-22 → 2026-12-28 (+6d) | 85% → 90% | 192.95d → 187.9d |
| TAEXSWCU210004 | Backfilling Works for Trench |  | 2026-12-07 → 2026-12-10 (+3d) | 90% → 95% | 195.8d → 192.5d |
| TAEXSWCU210006 | Leakage Test |  | 2026-12-23 → 2026-12-29 (+6d) | 80% → 85% | 192.95d → 187.9d |
| 5 | **Storm Networks** |  | 2027-01-30 → 2027-02-06 (+7d) |  |  |
| TAEXSTCU210007 | Leakage Test |  | 2027-01-30 → 2027-02-06 (+7d) |  | 149.6d → 143.6d |
| TAEXSTCU2100051 | Manhole Installation with backfilling Part 01 |  | 2026-12-10 → 2026-12-17 (+7d) |  | 42.95d → 36.95d |
| TAEXSTCU2100031 | Install GRP Pipes & Fittings Part 01 |  | 2026-11-11 → 2026-11-18 (+7d) |  | 42.95d → 36.95d |
| TAEXSTCU2100041 | Backfilling Works for Trench Part 01 |  | 2026-11-29 → 2026-12-06 (+7d) |  | 42.95d → 36.95d |
| TAEXSTCU2100021 | Bedding Works Part 01 | 2026-11-09 → 2026-11-16 (+7d) | 2026-11-09 → 2026-11-16 (+7d) |  | 42.95d → 36.95d |
| TAEXSTCU210006 | Install Catch Basin with UPVC Pipes & Fittings | 2027-01-13 → 2027-01-20 (+7d) | 2027-01-28 → 2027-02-04 (+7d) |  | 14.45d → 8.45d |
| 6 | **Upgrade local 26** |  | 2027-10-02 → 2027-09-11 (-21d) |  |  |
| 14 | **Electrical Works** |  | 2027-10-02 → 2027-09-11 (-21d) |  |  |
| TAEXELCU260001 | Trench Cut off |  | 2027-01-12 → 2027-01-13 (+1d) | 44% → 84% | -27.25d → -8.88d |
| TAEXELCU260005 | Cables Pulling |  | 2027-04-19 → 2027-04-24 (+5d) |  | 114.92d → 110.42d |
| TAEXELCU260004 | Trench Backfilling |  | 2027-04-17 → 2027-04-21 (+4d) |  | 114.92d → 110.42d |
| TAEXELCU260006 | Poles RC Foundation |  | 2027-04-13 → 2027-04-19 (+6d) |  | 92.13d → 87.63d |
| TAEXELCU260008 | Lighting Pole Installation with Luminares | 2027-04-13 → 2027-04-19 (+6d) | 2027-04-22 → 2027-04-28 (+6d) |  | 92.13d → 87.63d |
| TAEXELCU260007 | Earthing cables | 2027-09-27 → 2027-09-06 (-21d) | 2027-10-02 → 2027-09-11 (-21d) |  | -24.76d → -6.39d |
| 10 | **CCTV Works** | 2026-12-09 → 2026-12-15 (+6d) | 2027-06-24 → 2027-06-19 (-5d) |  |  |
| TAEXCCCU260001 | Pipe Installation with manhole | 2026-12-09 → 2026-12-15 (+6d) | 2026-12-21 → 2026-12-27 (+6d) |  | -31.75d → -26.25d |
| TAEXCCCU260002 | CCTV Swiches Lighting panels Installation | 2027-05-20 → 2027-05-15 (-5d) | 2027-06-03 → 2027-05-29 (-5d) |  | -31.75d → -26.25d |
| TAEXCCCU260003 | Cable laying and connected with Panels | 2027-06-03 → 2027-05-29 (-5d) | 2027-06-13 → 2027-06-07 (-6d) |  | 41.25d → 46.75d |
| TAEXCCCU260004 | Pole Installation with IP Outdoor CCTV POE Camera | 2027-06-13 → 2027-06-07 (-6d) | 2027-06-24 → 2027-06-19 (-5d) |  | 41.25d → 46.75d |
| 3 | **Local Road 10** |  | 2027-07-03 → 2027-06-27 (-6d) |  |  |
| 12 | **Road Works** |  | 2027-05-19 → 2027-05-25 (+6d) |  |  |
| TAEXRDCL100003 | Subgrade Works |  | 2026-12-10 → 2026-12-14 (+4d) | 25% → 98% | 56.6d → 53.52d |
| TAEXRDCL100004 | ABC aggregate Base Course Works | 2027-01-30 → 2027-02-06 (+7d) | 2027-02-02 → 2027-02-09 (+7d) |  | 14.45d → 8.45d |
| TAEXRDCL100005 | MBC1 layer | 2027-02-03 → 2027-02-10 (+7d) | 2027-02-03 → 2027-02-10 (+7d) |  | 14.45d → 8.45d |
| TAEXRDCL100006 | BBC Base Course | 2027-02-04 → 2027-02-11 (+7d) | 2027-02-06 → 2027-02-13 (+7d) |  | 14.45d → 8.45d |
| TAEXRDCL100008 | Precast Concret Kerps | 2027-02-07 → 2027-02-14 (+7d) | 2027-02-22 → 2027-03-01 (+7d) |  | 14.45d → 8.45d |
| TAEXRDCL100007 | BWC Asphalt Wearing Course with RC | 2027-04-28 → 2027-05-04 (+6d) | 2027-04-29 → 2027-05-05 (+6d) |  | 53.14d → 48.44d |
| TAEXRDCL100009 | Precast Interlock Works | 2027-04-29 → 2027-05-05 (+6d) | 2027-05-15 → 2027-05-20 (+5d) |  | 53.14d → 48.44d |
| TAEXRDCL100010 | Stone Paving works | 2027-05-15 → 2027-05-20 (+5d) | 2027-05-17 → 2027-05-23 (+6d) |  | 53.14d → 48.44d |
| TAEXRDCL100011 | Road Marking | 2027-05-17 → 2027-05-23 (+6d) | 2027-05-18 → 2027-05-24 (+6d) |  | 53.14d → 48.44d |
| TAEXRDCL100012 | Traffic Sinage | 2027-05-18 → 2027-05-24 (+6d) | 2027-05-19 → 2027-05-25 (+6d) |  | 53.14d → 48.44d |
| 25 | **Electrical Works** |  | 2027-06-16 → 2027-06-21 (+5d) |  |  |
| TAEXELCL100001 | Trench Cut off | 2027-01-12 → 2027-01-13 (+1d) | 2027-01-26 → 2027-01-27 (+1d) |  | -27.25d → -8.88d |
| TAEXELCL100002 | Drawpit and PVC Pipes Installation | 2027-04-07 → 2027-04-12 (+5d) | 2027-04-19 → 2027-04-24 (+5d) |  | 48.65d → 44.15d |
| TAEXELCL100003 | Road Crossing Ducts | 2027-04-19 → 2027-04-24 (+5d) | 2027-04-21 → 2027-04-26 (+5d) |  | 48.65d → 44.15d |
| TAEXELCL100006 | Poles RC Foundation | 2027-04-19 → 2027-04-24 (+5d) | 2027-04-22 → 2027-04-27 (+5d) |  | 59.65d → 55.15d |
| TAEXELCL100004 | Trench Backfilling | 2027-04-21 → 2027-04-26 (+5d) | 2027-05-03 → 2027-05-08 (+5d) |  | 48.65d → 44.15d |
| TAEXELCL100008 | Lighting Pole Installation with Luminares | 2027-04-22 → 2027-04-27 (+5d) | 2027-04-27 → 2027-05-02 (+5d) |  | 88.65d → 84.15d |
| TAEXELCL100005 | Cables Pulling | 2027-05-03 → 2027-05-08 (+5d) | 2027-05-05 → 2027-05-10 (+5d) |  | 48.65d → 44.15d |
| TAEXELCL100007 | Earthing cables | 2027-06-14 → 2027-06-19 (+5d) | 2027-06-16 → 2027-06-21 (+5d) |  | 14.65d → 10.15d |
| 14 | **Telecommunication Works** | 2027-02-01 → 2027-02-07 (+6d) | 2027-05-18 → 2027-05-23 (+5d) |  |  |
| TAEXTCCL100001 | Trench Cut off | 2027-02-01 → 2027-02-07 (+6d) | 2027-02-07 → 2027-02-13 (+6d) |  | -15.61d → -20.11d |
| TAEXTCCL100002 | Drawpit and PVC Pipes Installation | 2027-04-29 → 2027-05-04 (+5d) | 2027-05-04 → 2027-05-09 (+5d) |  | -8.87d → -13.37d |
| TAEXTCCL100003 | Road Crossing Ducts | 2027-05-04 → 2027-05-09 (+5d) | 2027-05-06 → 2027-05-11 (+5d) |  | 70.65d → 66.15d |
| TAEXTCCL100004 | Trench Backfilling | 2027-05-06 → 2027-05-11 (+5d) | 2027-05-18 → 2027-05-23 (+5d) |  | 70.65d → 66.15d |
| 10 | **CCTV Works** | 2026-12-21 → 2026-12-27 (+6d) | 2027-07-03 → 2027-06-27 (-6d) |  |  |
| TAEXCCCL100001 | Pipe Installation with manhole | 2026-12-21 → 2026-12-27 (+6d) | 2026-12-30 → 2027-01-05 (+6d) |  | -31.75d → -26.25d |
| TAEXCCCL100002 | CCTV Swiches Lighting panels Installation | 2027-06-03 → 2027-05-29 (-5d) | 2027-06-15 → 2027-06-09 (-6d) |  | -31.75d → -26.25d |
| TAEXCCCL100003 | Cable laying and connected with Panels | 2027-06-15 → 2027-06-09 (-6d) | 2027-06-22 → 2027-06-16 (-6d) |  | 34.25d → 39.75d |
| TAEXCCCL100004 | Pole Installation with IP Outdoor CCTV POE Camera | 2027-06-22 → 2027-06-16 (-6d) | 2027-07-03 → 2027-06-27 (-6d) |  | 34.25d → 39.75d |
| NEWPROJ-16-1-9-4 | **AMANAH ROAD** |  | 2027-07-21 → 2027-07-27 (+6d) |  |  |
| TAEXRDCA050007 | Backfilling Works for Road | 2027-06-22 → 2027-06-28 (+6d) | 2027-07-21 → 2027-07-27 (+6d) |  | 38.91d → 33.96d |
| 10 | **ZONE 2** |  | 2027-09-16 → 2027-09-11 (-5d) |  |  |
| 1 | **Collector Road 01** |  | 2027-08-07 → 2027-08-01 (-6d) |  |  |
| 13 | **Road Works** |  | 2027-05-05 → 2027-05-11 (+6d) |  |  |
| TAEXRDCC0100011 | Road Excavation and Disposal Part 01 | 2027-01-17 → 2027-01-23 (+6d) | 2027-01-20 → 2027-01-26 (+6d) |  | 3.14d → -1.56d |
| TAEXRDCC0100021 | Backfilling Works for Road Part 01 | 2027-01-20 → 2027-01-26 (+6d) | 2027-01-24 → 2027-01-30 (+6d) |  | 3.14d → -1.56d |

| ID | Task | Start | Finish | Complete | Total float |
| --- | --- | --- | --- | --- | --- |
| TAEXRDCC0100031 | Subgrade Works Part 01 | 2027-01-24 → 2027-01-30 (+6d) | 2027-02-08 → 2027-02-14 (+6d) |  | 3.14d → -1.56d |
| TAEXRDCC010004 | ABC aggregate Base Course Works | 2027-02-08 → 2027-02-14 (+6d) | 2027-03-01 → 2027-03-07 (+6d) |  | 3.14d → -1.56d |
| TAEXRDCC010005 | MBC1 layer | 2027-03-01 → 2027-03-07 (+6d) | 2027-03-03 → 2027-03-09 (+6d) |  | 3.14d → -1.56d |
| TAEXRDCC010006 | BBC Base Course | 2027-03-03 → 2027-03-09 (+6d) | 2027-03-08 → 2027-03-14 (+6d) |  | 3.14d → -1.56d |
| TAEXRDCC010008 | Precast Concret Kerps | 2027-03-08 → 2027-03-14 (+6d) | 2027-03-29 → 2027-04-04 (+6d) |  | 3.14d → -1.56d |
| TAEXRDCC010007 | BWC Asphalt Wearing Course with RC | 2027-03-29 → 2027-04-04 (+6d) | 2027-03-31 → 2027-04-06 (+6d) |  | 69.69d → 64.99d |
| TAEXRDCC010009 | Precast Interlock Works | 2027-03-31 → 2027-04-06 (+6d) | 2027-04-19 → 2027-04-25 (+6d) |  | 69.69d → 64.99d |
| TAEXRDCC010010 | Stone Paving works | 2027-04-19 → 2027-04-25 (+6d) | 2027-04-29 → 2027-05-05 (+6d) |  | 69.69d → 64.99d |
| TAEXRDCC010011 | Road Marking | 2027-04-29 → 2027-05-05 (+6d) | 2027-05-02 → 2027-05-08 (+6d) |  | 69.69d → 64.99d |
| TAEXRDCC010012 | Traffic Sinage | 2027-05-02 → 2027-05-08 (+6d) | 2027-05-05 → 2027-05-11 (+6d) |  | 69.69d → 64.99d |
| 11 | **Electrical Works** |  | 2027-06-19 → 2027-06-23 (+4d) |  |  |
| TAEXELCC010003 | Road Crossing Ducts |  | 2027-04-21 → 2027-04-26 (+5d) |  | 51.91d → 47.41d |
| TAEXELCC010001 | Trench Cut off | 2027-01-26 → 2027-01-27 (+1d) | 2027-02-10 → 2027-02-11 (+1d) |  | -27.25d → -8.88d |
| TAEXELCC010002 | Drawpit and PVC Pipes Installation | 2027-04-07 → 2027-04-12 (+5d) | 2027-04-19 → 2027-04-24 (+5d) |  | 51.91d → 47.41d |
| TAEXELCC010006 | Poles RC Foundation | 2027-04-19 → 2027-04-24 (+5d) | 2027-04-22 → 2027-04-27 (+5d) |  | 61.65d → 57.15d |
| TAEXELCC010004 | Trench Backfilling | 2027-04-21 → 2027-04-26 (+5d) | 2027-05-09 → 2027-05-13 (+4d) |  | 51.91d → 47.41d |
| TAEXELCC010005 | Cables Pulling | 2027-05-09 → 2027-05-13 (+4d) | 2027-05-13 → 2027-05-18 (+5d) |  | 51.91d → 47.41d |
| TAEXELCC010008 | Lighting Pole Installation with Luminares | 2027-05-13 → 2027-05-18 (+5d) | 2027-05-25 → 2027-05-30 (+5d) |  | 51.91d → 47.41d |
| TAEXELCC010007 | Earthing cables | 2027-06-16 → 2027-06-21 (+5d) | 2027-06-19 → 2027-06-23 (+4d) |  | 14.65d → 10.15d |
| 1 | **Telecommunication Works** |  | 2027-06-03 → 2027-06-09 (+6d) |  |  |
| TAEXTCCC010003 | Road Crossing Ducts |  | 2027-05-17 → 2027-05-23 (+6d) |  | 42.05d → 37.55d |
| TAEXTCCC010001 | Trench Cut off | 2027-02-07 → 2027-02-13 (+6d) | 2027-03-06 → 2027-03-11 (+5d) |  | -15.61d → -20.11d |
| TAEXTCCC010002 | Drawpit and HDPE Pipes Installation | 2027-05-04 → 2027-05-09 (+5d) | 2027-05-16 → 2027-05-20 (+4d) |  | -8.87d → -13.37d |
| TAEXTCCC010004 | Trench Backfilling | 2027-05-17 → 2027-05-23 (+6d) | 2027-06-03 → 2027-06-09 (+6d) |  | 42.05d → 37.55d |
| 2 | **CCTV Works** | 2026-12-30 → 2027-01-05 (+6d) | 2027-08-07 → 2027-08-01 (-6d) |  |  |
| TAEXCCCC010001 | Pipe Installation with manhole | 2026-12-30 → 2027-01-05 (+6d) | 2027-01-13 → 2027-01-19 (+6d) |  | -31.75d → -26.25d |
| TAEXCCCC010002 | CCTV Swiches Lighting panels Installation | 2027-06-15 → 2027-06-09 (-6d) | 2027-07-04 → 2027-06-28 (-6d) |  | -31.75d → -26.25d |
| TAEXCCCC010003 | Cable laying and connected with Panels | 2027-07-04 → 2027-06-28 (-6d) | 2027-07-18 → 2027-07-12 (-6d) |  | 4.25d → 9.75d |
| TAEXCCCC010004 | Pole Installation with IP Outdoor CCTV POE Camera | 2027-07-18 → 2027-07-12 (-6d) | 2027-08-07 → 2027-08-01 (-6d) |  | 4.25d → 9.75d |
| 3 | **Potable Networks** |  | 2027-03-22 → 2027-03-15 (-7d) |  |  |
| TAEXPTCC010002 | Bedding Works |  | 2026-11-22 → 2026-11-29 (+7d) |  | 3.14d → -1.56d |
| TAEXPTCC010003 | Install Pipes & Fittings |  | 2026-12-03 → 2026-12-10 (+7d) |  | 3.14d → -1.56d |
| TAEXPTCC010004 | Backfilling Works for Trench |  | 2026-12-17 → 2026-12-24 (+7d) |  | 3.14d → -1.56d |
| TAEXPTCC010007 | Valve Chamber works |  | 2027-03-17 → 2027-03-10 (-7d) |  | 112.82d → 118.2d |
| TAEXPTCC010005 | Install Valves with fittings |  | 2027-02-18 → 2027-02-13 (-5d) |  | 115.79d → 121.27d |
| TAEXPTCC0100011 | Excavation works for Trench Part 01 | 2026-11-09 → 2026-11-16 (+7d) | 2026-11-21 → 2026-11-28 (+7d) |  | 3.14d → -1.56d |
| TAEXPTCC010006 | Install fire hydrent | 2027-02-13 → 2027-02-07 (-6d) | 2027-02-21 → 2027-02-15 (-6d) |  | 92.72d → 109.3d |
| TAEXPTCC010008 | Inspection Test | 2027-03-17 → 2027-03-10 (-7d) | 2027-03-22 → 2027-03-15 (-7d) |  | 112.82d → 118.2d |
| 4 | **TSE Networks** |  | 2027-03-27 → 2027-03-20 (-7d) |  |  |
| TAEXTSCC010005 | Install Valves with fittings |  | 2027-01-05 → 2027-01-12 (+7d) | 15% → 35% | 3.14d → -1.56d |
| TAEXTSCC010006 | Valve Chamber works |  | 2027-01-17 → 2027-01-23 (+6d) | 25% → 35% | 3.14d → -1.56d |
| TAEXTSCC010003 | Install Pipes & Fittings |  | 2026-12-06 → 2026-12-13 (+7d) | 85% → 90% | 12.72d → 8.72d |
| TAEXTSCC010002 | Bedding Works |  | 2026-11-22 → 2026-11-15 A (-7d) | 90% → 100% | 22.74d → none |
| TAEXTSCC010004 | Backfilling Works for Trench | 2026-12-17 → 2026-12-24 (+7d) | 2027-01-05 → 2027-01-12 (+7d) |  | 3.14d → -1.56d |
| TAEXTSCC010007 | Inspection Test | 2027-03-22 → 2027-03-15 (-7d) | 2027-03-27 → 2027-03-20 (-7d) |  | 112.82d → 118.2d |
| 5 | **Sewerage Networks** |  | 2026-12-22 → 2026-12-27 (+5d) |  |  |
| TAEXSWCC010005 | Manhole Installation with backfilling |  | 2026-12-21 → 2026-12-27 (+6d) | 90% → 95% | 182.85d → 178.05d |
| TAEXSWCC010006 | Leakage Test |  | 2026-12-22 → 2026-12-27 (+5d) | 85% → 95% | 182.85d → 178.05d |
| 6 | **Storm Networks** |  | 2026-12-23 → 2026-12-29 (+6d) |  |  |
| TAEXSTCC0100051 | Manhole Installation with backfilling Part 01 |  | 2026-12-01 → 2026-12-08 (+7d) |  | 59.11d → 53.11d |
| TAEXSTCC0100091 | Install Box Culvert Part 2 Part 01 |  | 2026-12-01 → 2026-12-08 (+7d) |  | 59.11d → 53.11d |
| TAEXSTCC010006 | Install Catch Basin with UPVC Pipes & Fittings |  | 2026-12-05 → 2026-12-12 (+7d) |  | 59.11d → 53.11d |
| TAEXSTCC0100041 | Backfilling Works for Trench & Box Culvert Part 01 |  | 2026-11-14 → 2026-11-21 (+7d) |  | 73.85d → 67.85d |
| TAEXSTCC010007 | Leakage Test |  | 2026-12-23 → 2026-12-29 (+6d) | 45% → 55% | 192.2d → 187.7d |
| 11 | **Upgrade Local 28** |  | 2027-08-15 → 2027-08-09 (-6d) |  |  |
| 24 | **Road Works** | 2027-03-29 → 2027-04-04 (+6d) | 2027-05-27 → 2027-06-02 (+6d) |  |  |
| TAEXRDCU280002 | Precast Concret Kerps | 2027-03-29 → 2027-04-04 (+6d) | 2027-04-15 → 2027-04-21 (+6d) |  | 3.14d → -1.56d |
| TAEXRDCU280001 | BWC Asphalt Wearing Course with RC | 2027-05-03 → 2027-05-09 (+6d) | 2027-05-04 → 2027-05-10 (+6d) |  | 50.69d → 45.99d |
| TAEXRDCU280003 | Precast Interlock Works | 2027-05-04 → 2027-05-10 (+6d) | 2027-05-19 → 2027-05-25 (+6d) |  | 50.69d → 45.99d |
| TAEXRDCU280004 | Stone Paving works | 2027-05-19 → 2027-05-25 (+6d) | 2027-05-24 → 2027-05-30 (+6d) |  | 50.69d → 45.99d |
| TAEXRDCU280005 | Road Marking | 2027-05-24 → 2027-05-30 (+6d) | 2027-05-25 → 2027-05-31 (+6d) |  | 50.69d → 45.99d |
| TAEXRDCU280006 | Traffic Sinage | 2027-05-25 → 2027-05-31 (+6d) | 2027-05-27 → 2027-06-02 (+6d) |  | 50.69d → 45.99d |
| 15 | **Electrical Works** |  | 2027-06-23 → 2027-06-28 (+5d) |  |  |
| TAEXELCU280005 | Cables Pulling |  | 2027-05-17 → 2027-05-23 (+6d) |  | 42.33d → 37.83d |
| TAEXELCU280002 | Drawpit and PVC Pipes Installation | 2027-04-07 → 2027-04-12 (+5d) | 2027-04-20 → 2027-04-25 (+5d) |  | 37.65d → 33.15d |
| TAEXELCU280003 | Road Crossing Ducts | 2027-04-20 → 2027-04-25 (+5d) | 2027-04-25 → 2027-04-29 (+4d) |  | 42.33d → 37.83d |
| TAEXELCU280004 | Trench Backfilling | 2027-04-25 → 2027-04-29 (+4d) | 2027-05-15 → 2027-05-19 (+4d) |  | 42.33d → 37.83d |
| TAEXELCU280006 | Poles RC Foundation | 2027-05-16 → 2027-05-20 (+4d) | 2027-05-23 → 2027-05-27 (+4d) |  | 37.65d → 33.15d |
| TAEXELCU280008 | Lighting Pole Installation with Luminares | 2027-05-23 → 2027-05-27 (+4d) | 2027-06-01 → 2027-06-06 (+5d) |  | 45.65d → 41.15d |
| TAEXELCU280007 | Earthing cables | 2027-06-19 → 2027-06-23 (+4d) | 2027-06-23 → 2027-06-28 (+5d) |  | 14.65d → 10.15d |

| ID | Task | Start | Finish | Complete | Total float |
| --- | --- | --- | --- | --- | --- |
| 1 | **Telecommunication Works** | 2027-03-06 → 2027-03-11 (+5d) | 2027-06-14 → 2027-06-19 (+5d) |  |  |
| TAEXTCCU280001 | Trench Cut off | 2027-03-06 → 2027-03-11 (+5d) | 2027-03-17 → 2027-03-23 (+6d) |  | -15.61d → -20.11d |
| TAEXTCCU280002 | Drawpit and PVC Pipes Installation | 2027-05-16 → 2027-05-20 (+4d) | 2027-05-25 → 2027-05-30 (+5d) |  | -8.87d → -13.37d |
| TAEXTCCU280003 | Road Crossing Ducts | 2027-05-25 → 2027-05-30 (+5d) | 2027-05-30 → 2027-06-03 (+4d) |  | 33.65d → 29.15d |
| TAEXTCCU280004 | Trench Backfilling | 2027-05-30 → 2027-06-03 (+4d) | 2027-06-14 → 2027-06-19 (+5d) |  | 33.65d → 29.15d |
| 2 | **CCTV Works** | 2027-01-13 → 2027-01-19 (+6d) | 2027-08-15 → 2027-08-09 (-6d) |  |  |
| TAEXCCCU280001 | Pipe Installation with manhole | 2027-01-13 → 2027-01-19 (+6d) | 2027-01-27 → 2027-02-02 (+6d) |  | -31.75d → -26.25d |
| TAEXCCCU280002 | CCTV Swiches Lighting panels Installation | 2027-07-04 → 2027-06-28 (-6d) | 2027-07-20 → 2027-07-14 (-6d) |  | -31.75d → -26.25d |
| TAEXCCCU280003 | Cable laying and connected with Panels | 2027-07-20 → 2027-07-14 (-6d) | 2027-08-01 → 2027-07-26 (-6d) |  | -2.75d → 2.75d |
| TAEXCCCU280004 | Pole Installation with IP Outdoor CCTV POE Camera | 2027-08-01 → 2027-07-26 (-6d) | 2027-08-15 → 2027-08-09 (-6d) |  | -2.75d → 2.75d |
| 3 | **Potable Networks** |  | 2027-03-17 → 2027-03-10 (-7d) |  |  |
| TAEXPTCU280007 | Valve Chamber works | 2027-02-28 → 2027-02-21 (-7d) | 2027-03-17 → 2027-03-10 (-7d) |  | 116.82d → 122.2d |
| 4 | **TSE Networks** |  | 2027-03-22 → 2027-03-15 (-7d) |  |  |
| TAEXTSCU280005 | Install Valves with fittings |  | 2027-01-09 → 2027-01-16 (+7d) |  | 161.45d → 155.45d |
| TAEXTSCU280006 | Valve Chamber works |  | 2027-01-24 → 2027-01-31 (+7d) |  | 161.45d → 155.45d |
| TAEXTSCU280001 | Excavation works for Trench | 2026-11-16 → 2026-11-23 (+7d) | 2026-12-12 → 2026-12-19 (+7d) |  | 54.7d → 70.7d |
| TAEXTSCU280002 | Bedding Works | 2026-12-12 → 2026-12-19 (+7d) | 2026-12-14 → 2026-12-21 (+7d) |  | 161.45d → 155.45d |
| TAEXTSCU280003 | Install Pipes & Fittings | 2026-12-14 → 2026-12-21 (+7d) | 2026-12-23 → 2026-12-30 (+7d) |  | 161.45d → 155.45d |
| TAEXTSCU280004 | Backfilling Works for Trench | 2026-12-23 → 2026-12-30 (+7d) | 2027-01-09 → 2027-01-16 (+7d) |  | 161.45d → 155.45d |
| TAEXTSCU280007 | Inspection Test | 2027-03-17 → 2027-03-10 (-7d) | 2027-03-22 → 2027-03-15 (-7d) |  | 116.82d → 122.2d |
| 19 | **Storm Networks** |  | 2027-01-02 → 2027-01-09 (+7d) |  |  |
| TAEXSTCU280006 | Install Catch Basin with UPVC Pipes & Fittings | 2026-12-20 → 2026-12-27 (+7d) | 2027-01-02 → 2027-01-09 (+7d) |  | 14.45d → 8.45d |
| 5 | **Local Road 02** |  | 2027-09-02 → 2027-08-28 (-5d) |  |  |
| 2 | **Road Works** |  | 2027-06-22 → 2027-06-28 (+6d) |  |  |
| TAEXRDC L020008 | Precast Concret Kerps |  | 2027-04-20 → 2027-04-26 (+6d) |  | 3.14d → -1.56d |
| TAEXRDC L020007 | BWC Asphalt Wearing Course with RC | 2027-04-29 → 2027-05-05 (+6d) | 2027-05-01 → 2027-05-06 (+5d) |  | 51.92d → 46.29d |
| TAEXRDC L020009 | Precast Interlock Works | 2027-05-01 → 2027-05-06 (+5d) | 2027-05-11 → 2027-05-17 (+6d) |  | 55.92d → 50.29d |
| TAEXRDC L020010 | Stone Paving works | 2027-05-11 → 2027-05-17 (+6d) | 2027-05-16 → 2027-05-22 (+6d) |  | 55.92d → 50.29d |
| TAEXRDC L020011 | Road Marking | 2027-06-16 → 2027-06-22 (+6d) | 2027-06-20 → 2027-06-26 (+6d) |  | 28.91d → 23.96d |
| TAEXRDC L020012 | Traffic Sinage | 2027-06-20 → 2027-06-26 (+6d) | 2027-06-22 → 2027-06-28 (+6d) |  | 28.91d → 23.96d |
| 1 | **Electrical Works** |  | 2027-06-26 → 2027-06-30 (+4d) |  |  |
| TAEXELCL020001 | Trench Cut off |  | 2027-02-23 → 2027-02-24 (+1d) |  | -27.25d → -8.88d |
| TAEXELCL020004 | Trench Backfilling |  | 2027-04-13 → 2027-04-19 (+6d) |  | 75.25d → 70.75d |
| TAEXELCL020006 | Poles RC Foundation | 2027-04-07 → 2027-04-12 (+5d) | 2027-04-11 → 2027-04-15 (+4d) |  | 77.65d → 73.15d |
| TAEXELCL020008 | Lighting Pole Installation with Luminares | 2027-04-11 → 2027-04-15 (+4d) | 2027-04-15 → 2027-04-20 (+5d) |  | 85.65d → 81.15d |
| TAEXELCL020007 | Earthing cables | 2027-06-23 → 2027-06-28 (+5d) | 2027-06-26 → 2027-06-30 (+4d) |  | 14.65d → 10.15d |
| 5 | **Telecommunication Works** |  | 2027-06-05 → 2027-06-09 (+4d) |  |  |
| TAEXTCCL020001 | Trench Cut off |  | 2027-03-24 → 2027-03-29 (+5d) |  | -15.61d → -20.11d |
| TAEXTCCL020004 | Trench Backfilling | 2027-05-25 → 2027-05-30 (+5d) | 2027-06-05 → 2027-06-09 (+4d) |  | 41.65d → 37.15d |
| 3 | **CCTV Works** | 2027-01-27 → 2027-02-02 (+6d) | 2027-09-02 → 2027-08-28 (-5d) |  |  |
| TAEXCCCL020001 | Pipe Installation with manhole | 2027-01-27 → 2027-02-02 (+6d) | 2027-02-08 → 2027-02-14 (+6d) |  | -31.75d → -26.25d |
| TAEXCCCL020002 | CCTV Swiches Lighting panels Installation | 2027-07-20 → 2027-07-14 (-6d) | 2027-08-04 → 2027-07-29 (-6d) |  | -31.75d → -26.25d |
| TAEXCCCL020003 | Cable laying and connected with Panels | 2027-08-04 → 2027-07-29 (-6d) | 2027-08-16 → 2027-08-10 (-6d) |  | -18.75d → -13.25d |
| TAEXCCCL020004 | Pole Installation with IP Outdoor CCTV POE Camera | 2027-08-16 → 2027-08-10 (-6d) | 2027-09-02 → 2027-08-28 (-5d) |  | -18.75d → -13.25d |
| 7 | **Local Road 03** |  | 2027-09-15 → 2027-09-09 (-6d) |  |  |
| 2 | **Road Works** |  | 2027-05-09 → 2027-05-13 (+4d) |  |  |
| TAEXRDCL0300021 | Backfilling Works for Road Part 01 |  | 2026-12-01 → 2026-12-08 (+7d) |  | 62.01d → 58.93d |
| TAEXRDCL030008 | Precast Concret Kerps |  | 2027-04-21 → 2027-04-26 (+5d) |  | 3.14d → -1.56d |
| TAEXRDCL030007 | BWC Asphalt Wearing Course with RC | 2027-04-21 → 2027-04-26 (+5d) | 2027-04-22 → 2027-04-27 (+5d) |  | 66.74d → 62.04d |
| TAEXRDCL030009 | Precast Interlock Works | 2027-04-22 → 2027-04-27 (+5d) | 2027-05-02 → 2027-05-06 (+4d) |  | 66.74d → 62.04d |
| TAEXRDCL030010 | Stone Paving works | 2027-05-02 → 2027-05-06 (+4d) | 2027-05-05 → 2027-05-10 (+5d) |  | 66.74d → 62.04d |
| TAEXRDCL030011 | Road Marking | 2027-05-05 → 2027-05-10 (+5d) | 2027-05-06 → 2027-05-11 (+5d) |  | 66.74d → 62.04d |
| TAEXRDCL030012 | Traffic Sinage | 2027-05-06 → 2027-05-11 (+5d) | 2027-05-09 → 2027-05-13 (+4d) |  | 66.74d → 62.04d |
| 1 | **Electrical Works** |  | 2027-06-28 → 2027-07-03 (+5d) |  |  |
| TAEXELCL030002 | Drawpit and PVC Pipes Installation |  | 2027-04-10 → 2027-04-14 (+4d) |  | 73d → 68.5d |
| TAEXELCL030003 | Road Crossing Ducts |  | 2027-04-10 → 2027-04-15 (+5d) |  | 73d → 68.5d |
| TAEXELCL030001 | Trench Cut off |  | 2027-03-02 → 2027-02-28 (-2d) | 51% → 70% | -27.25d → -8.88d |
| TAEXELCL030005 | Cables Pulling |  | 2027-04-18 → 2027-04-24 (+6d) |  | 73d → 68.5d |
| TAEXELCL030004 | Trench Backfilling |  | 2027-04-15 → 2027-04-21 (+6d) |  | 73d → 68.5d |
| TAEXELCL030006 | Poles RC Foundation | 2027-04-10 → 2027-04-14 (+4d) | 2027-04-13 → 2027-04-18 (+5d) |  | 77.65d → 73.15d |
| TAEXELCL030008 | Lighting Pole Installation with Luminares | 2027-04-13 → 2027-04-18 (+5d) | 2027-04-19 → 2027-04-24 (+5d) |  | 82.65d → 78.15d |
| TAEXELCL030007 | Earthing cables | 2027-06-26 → 2027-06-30 (+4d) | 2027-06-28 → 2027-07-03 (+5d) |  | 14.65d → 10.15d |
| 3 | **Telecommunication Works** |  | 2027-06-08 → 2027-06-13 (+5d) |  |  |
| TAEXTCCL030002 | Drawpit and PVC Pipes Installation |  | 2027-05-26 → 2027-06-01 (+6d) |  | -8.87d → -13.37d |
| TAEXTCCL030003 | Road Crossing Ducts |  | 2027-05-27 → 2027-06-01 (+5d) |  | 38.67d → 34.17d |
| TAEXTCCL030001 | Trench Cut off | 2027-03-24 → 2027-03-29 (+5d) | 2027-04-01 → 2027-04-06 (+5d) |  | -15.61d → -20.11d |
| TAEXTCCL030004 | Trench Backfilling | 2027-05-27 → 2027-06-01 (+5d) | 2027-06-08 → 2027-06-13 (+5d) |  | 38.67d → 34.17d |
| 4 | **CCTV Works** | 2027-02-08 → 2027-02-14 (+6d) | 2027-09-15 → 2027-09-09 (-6d) |  |  |
| TAEXCCCL030001 | Pipe Installation with manhole | 2027-02-08 → 2027-02-14 (+6d) | 2027-02-21 → 2027-02-27 (+6d) |  | -31.75d → -26.25d |
| TAEXCCCL030002 | CCTV Swiches Lighting panels Installation | 2027-08-04 → 2027-07-29 (-6d) | 2027-08-19 → 2027-08-14 (-5d) |  | -31.75d → -26.25d |

| ID | Task | Start | Finish | Complete | Total float | Predecessors |
| --- | --- | --- | --- | --- | --- | --- |
| TAEXCCCL030003 | Cable laying and connected with Panels | 2027-08-19 → 2027-08-14 (-5d) | 2027-08-31 → 2027-08-25 (-6d) |  | -30.75d → -25.25d |  |
| TAEXCCCL030004 | Pole Installation with IP Outdoor CCTV POE Camera | 2027-08-31 → 2027-08-25 (-6d) | 2027-09-15 → 2027-09-09 (-6d) |  | -30.75d → -25.25d |  |
| 9 | **Local Road 04** |  | 2027-09-12 → 2027-09-06 (-6d) |  |  |  |
| 2 | **Road Works** |  | 2027-06-09 → 2027-06-14 (+5d) |  |  |  |
| TAEXRDCL040007 | BWC Asphalt Wearing Course with RC | 2027-04-21 → 2027-04-26 (+5d) | 2027-05-15 → 2027-05-19 (+4d) |  | 39.74d → 35.04d |  |
| TAEXRDCL040009 | Precast Interlock Works | 2027-05-15 → 2027-05-19 (+4d) | 2027-05-29 → 2027-06-02 (+4d) |  | 39.74d → 35.04d |  |
| TAEXRDCL040010 | Stone Paving works | 2027-05-29 → 2027-06-02 (+4d) | 2027-06-06 → 2027-06-10 (+4d) |  | 39.74d → 35.04d |  |
| TAEXRDCL040011 | Road Marking | 2027-06-06 → 2027-06-10 (+4d) | 2027-06-07 → 2027-06-12 (+5d) |  | 39.74d → 35.04d |  |
| TAEXRDCL040012 | Traffic Sinage | 2027-06-07 → 2027-06-12 (+5d) | 2027-06-09 → 2027-06-14 (+5d) |  | 39.74d → 35.04d |  |
| 1 | **Electrical Works** |  | 2027-06-30 → 2027-07-05 (+5d) |  |  |  |
| TAEXELCL040001 | Trench Cut off |  | 2027-03-14 → 2027-03-03 (-11d) | 30% → 77% | -27.25d → -8.88d |  |
| TAEXELCL040006 | Poles RC Foundation |  | 2027-04-08 → 2027-04-14 (+6d) |  | 83.15d → 78.65d |  |
| TAEXELCL040004 | Trench Backfilling | 2027-04-07 → 2027-04-12 (+5d) | 2027-04-19 → 2027-04-24 (+5d) |  | 71.65d → 67.15d |  |
| TAEXELCL040008 | Lighting Pole Installation with Luminares | 2027-04-08 → 2027-04-14 (+6d) | 2027-04-14 → 2027-04-20 (+6d) |  | 86.15d → 81.65d |  |
| TAEXELCL040005 | Cables Pulling | 2027-04-19 → 2027-04-24 (+5d) | 2027-04-22 → 2027-04-27 (+5d) |  | 71.65d → 67.15d |  |
| TAEXELCL040009 | Install Substation & RMU | 2027-04-22 → 2027-04-27 (+5d) | 2027-05-03 → 2027-05-08 (+5d) |  | 84.65d → 80.15d |  |
| TAEXELCL040007 | Earthing cables | 2027-06-28 → 2027-07-03 (+5d) | 2027-06-30 → 2027-07-05 (+5d) |  | 14.65d → 10.15d |  |
| 3 | **Telecommunication Works** |  | 2027-06-07 → 2027-06-13 (+6d) |  |  |  |
| TAEXTCCL040001 | Trench Cut off |  | 2027-04-08 → 2027-04-14 (+6d) |  | -15.61d → -20.11d |  |
| TAEXTCCL040004 | Trench Backfilling | 2027-05-26 → 2027-06-01 (+6d) | 2027-06-07 → 2027-06-13 (+6d) |  | 39.33d → 34.83d |  |
| 4 | **CCTV Works** | 2027-02-21 → 2027-02-27 (+6d) | 2027-09-12 → 2027-09-06 (-6d) |  |  |  |
| TAEXCCCL040001 | Pipe Installation with manhole | 2027-02-21 → 2027-02-27 (+6d) | 2027-03-04 → 2027-03-10 (+6d) |  | -31.75d → -26.25d |  |
| TAEXCCCL040002 | CCTV Swiches Lighting panels Installation | 2027-08-04 → 2027-07-29 (-6d) | 2027-08-16 → 2027-08-10 (-6d) |  | -31.75d → -26.25d |  |
| TAEXCCCL040003 | Cable laying and connected with Panels | 2027-08-16 → 2027-08-10 (-6d) | 2027-08-28 → 2027-08-22 (-6d) |  | -27.75d → -22.25d |  |
| TAEXCCCL040004 | Pole Installation with IP Outdoor CCTV POE Camera | 2027-08-28 → 2027-08-22 (-6d) | 2027-09-12 → 2027-09-06 (-6d) |  | -27.75d → -22.25d |  |
| 2 | **Local Road 05** |  | 2027-09-16 → 2027-09-11 (-5d) |  |  |  |
| 3 | **Road Works** |  | 2027-05-26 → 2027-06-01 (+6d) |  |  |  |
| TAEXRDCL050007 | BWC Asphalt Wearing Course with RC | 2027-05-01 → 2027-05-06 (+5d) | 2027-05-02 → 2027-05-08 (+6d) |  | 51.92d → 46.29d |  |
| TAEXRDCL050009 | Precast Interlock Works | 2027-05-02 → 2027-05-08 (+6d) | 2027-05-19 → 2027-05-25 (+6d) |  | 51.92d → 46.29d |  |
| TAEXRDCL050010 | Stone Paving works | 2027-05-19 → 2027-05-25 (+6d) | 2027-05-23 → 2027-05-29 (+6d) |  | 51.92d → 46.29d |  |
| TAEXRDCL050011 | Road Marking | 2027-05-23 → 2027-05-29 (+6d) | 2027-05-24 → 2027-05-30 (+6d) |  | 51.92d → 46.29d |  |
| TAEXRDCL050012 | Traffic Sinage | 2027-05-24 → 2027-05-30 (+6d) | 2027-05-26 → 2027-06-01 (+6d) |  | 51.92d → 46.29d |  |
| 1 | **Electrical Works** |  | 2027-07-03 → 2027-07-07 (+4d) |  |  |  |
| TAEXELCL050001 | Trench Cut off |  | 2027-03-23 → 2027-03-06 (-17d) | 30% → 85% | -27.25d → -8.88d |  |
| TAEXELCL050005 | Cables Pulling |  | 2027-04-22 → 2027-04-27 (+5d) |  | 73.8d → 69.3d |  |
| TAEXELCL050004 | Trench Backfilling | 2027-04-07 → 2027-04-12 (+5d) | 2027-04-19 → 2027-04-24 (+5d) |  | 73.8d → 69.3d |  |
| TAEXELCL050006 | Poles RC Foundation | 2027-04-07 → 2027-04-12 (+5d) | 2027-04-11 → 2027-04-15 (+4d) |  | 54.65d → 50.15d |  |
| TAEXELCL050008 | Lighting Pole Installation with Luminares | 2027-04-11 → 2027-04-15 (+4d) | 2027-04-17 → 2027-04-21 (+4d) |  | 54.65d → 50.15d |  |
| TAEXELCL050007 | Earthing cables | 2027-06-30 → 2027-07-05 (+5d) | 2027-07-03 → 2027-07-07 (+4d) |  | 14.65d → 10.15d |  |
| 2 | **Telecommunication Works** |  | 2027-06-07 → 2027-06-13 (+6d) |  |  |  |
| TAEXTCCL050001 | Trench Cut off |  | 2027-04-17 → 2027-04-22 (+5d) |  | -15.61d → -20.11d |  |
| TAEXTCCL050004 | Trench Backfilling | 2027-05-26 → 2027-06-01 (+6d) | 2027-06-07 → 2027-06-13 (+6d) |  | 32.33d → 27.83d |  |
| 4 | **CCTV Works** | 2027-03-04 → 2027-02-27 (-5d) | 2027-09-16 → 2027-09-11 (-5d) |  |  |  |
| TAEXCCCL050001 | Pipe Installation with manhole | 2027-03-04 → 2027-02-27 (-5d) | 2027-03-16 → 2027-03-10 (-6d) |  | -31.75d → -26.25d | TAEXCCCL040001 → TAEXCCCL040001 SS |
| TAEXCCCL050002 | CCTV Swiches Lighting panels Installation | 2027-08-16 → 2027-08-10 (-6d) | 2027-08-28 → 2027-08-22 (-6d) |  | -31.75d → -26.25d |  |
| TAEXCCCL050003 | Cable laying and connected with Panels | 2027-08-28 → 2027-08-22 (-6d) | 2027-09-07 → 2027-09-02 (-5d) |  | -31.75d → -26.25d |  |
| TAEXCCCL050004 | Pole Installation with IP Outdoor CCTV POE Camera | 2027-09-07 → 2027-09-02 (-5d) | 2027-09-16 → 2027-09-11 (-5d) |  | -31.75d → -26.25d |  |
| 11 | **ZONE 3** |  | 2027-09-27 → 2027-09-09 (-18d) |  |  |  |
| 1 | **Local Road 01** |  | 2027-08-01 → 2027-07-15 (-17d) |  |  |  |
| 12 | **Road Works** |  | 2027-06-14 → 2027-06-20 (+6d) |  |  |  |
| TAEXRDCL010004 | ABC aggregate Base Course Works |  | 2027-02-03 → 2027-02-10 (+7d) |  | 68.24d → 62.24d |  |
| TAEXRDCL010005 | MBC1 layer |  | 2027-02-03 → 2027-02-10 (+7d) |  | 68.24d → 62.24d |  |
| TAEXRDCL010006 | BBC Base Course |  | 2027-02-04 → 2027-02-11 (+7d) |  | 68.24d → 62.24d |  |
| TAEXRDCL010008 | Precast Concret Kerps |  | 2027-04-27 → 2027-05-03 (+6d) |  | 3.14d → -1.56d |  |
| TAEXRDCL010007 | BWC Asphalt Wearing Course with RC | 2027-04-27 → 2027-05-03 (+6d) | 2027-04-28 → 2027-05-04 (+6d) |  | 42.14d → 37.44d |  |
| TAEXRDCL010009 | Precast Interlock Works | 2027-05-19 → 2027-05-25 (+6d) | 2027-06-06 → 2027-06-12 (+6d) |  | 42.14d → 37.44d |  |
| TAEXRDCL010010 | Stone Paving works | 2027-06-06 → 2027-06-12 (+6d) | 2027-06-10 → 2027-06-16 (+6d) |  | 42.14d → 37.44d |  |
| TAEXRDCL010011 | Road Marking | 2027-06-10 → 2027-06-16 (+6d) | 2027-06-12 → 2027-06-17 (+5d) |  | 42.14d → 37.44d |  |
| TAEXRDCL010012 | Traffic Sinage | 2027-06-12 → 2027-06-17 (+5d) | 2027-06-14 → 2027-06-20 (+6d) |  | 42.14d → 37.44d |  |
| 1 | **Electrical Works** |  | 2027-08-01 → 2027-07-15 (-17d) |  |  |  |
| TAEXELCL010002 | Road Crossing Ducts |  | 2027-05-23 → 2027-05-06 (-17d) |  | -8.94d → 5.93d |  |
| TAEXELCL010003 | Drawpit and PVC Pipes Installation |  | 2027-05-20 → 2027-05-03 (-17d) |  | -8.94d → 5.93d |  |
| TAEXELCL010001 | Trench Cut off | 2027-05-02 → 2027-04-14 (-18d) | 2027-05-16 → 2027-04-28 (-18d) |  | -27.25d → -8.88d |  |
| TAEXELCL010006 | Poles RC Foundation | 2027-05-20 → 2027-05-03 (-17d) | 2027-05-24 → 2027-05-06 (-18d) |  | 48.34d → 63.21d |  |
| TAEXELCL010004 | Trench Backfilling | 2027-05-23 → 2027-05-06 (-17d) | 2027-06-03 → 2027-05-18 (-16d) |  | -8.94d → 5.93d |  |
| TAEXELCL010008 | Lighting Pole Installation with Luminares | 2027-05-24 → 2027-05-06 (-18d) | 2027-05-30 → 2027-05-12 (-18d) |  | 54.34d → 69.21d |  |
| TAEXELCL010005 | Cables Pulling | 2027-07-26 → 2027-07-10 (-16d) | 2027-07-29 → 2027-07-13 (-16d) |  | -8.94d → 5.93d |  |
| TAEXELCL010007 | Earthing cables | 2027-07-29 → 2027-07-13 (-16d) | 2027-08-01 → 2027-07-15 (-17d) |  | -8.94d → 5.93d |  |
| 2 | **Telecommunication Works** |  | 2027-06-13 → 2027-06-17 (+4d) |  |  |  |
| TAEXTCCL010002 | Drawpit and PVC Pipes Installation |  | 2027-05-30 → 2027-06-05 (+6d) |  | -8.87d → -13.37d |  |

| ID | Task | Start | Finish | Total float |
| --- | --- | --- | --- | --- |
| TAEXTCCL010003 | Road Crossing Ducts |  | 2027-06-01 → 2027-06-06 (+5d) | 41.53d → 37.03d |
| TAEXTCCL010001 | Trench Cut off | 2027-05-10 → 2027-05-16 (+6d) | 2027-05-18 → 2027-05-24 (+6d) | -15.61d → -20.11d |
| TAEXTCCL010004 | Trench Backfilling | 2027-06-01 → 2027-06-06 (+5d) | 2027-06-13 → 2027-06-17 (+4d) | 41.53d → 37.03d |
| 16 | **CCTV Works** | 2027-05-12 → 2027-05-06 (-6d) | 2027-07-10 → 2027-07-04 (-6d) |  |
| TAEXCCCL010001 | Pipe Installation with manhole | 2027-05-12 → 2027-05-06 (-6d) | 2027-05-26 → 2027-05-20 (-6d) | -30.75d → -25.25d |
| TAEXCCCL010002 | CCTV Swiches Lighting panels Installation | 2027-05-26 → 2027-05-20 (-6d) | 2027-06-10 → 2027-06-05 (-5d) | 28.25d → 33.75d |
| TAEXCCCL010003 | Cable laying and connected with Panels | 2027-06-10 → 2027-06-05 (-5d) | 2027-06-22 → 2027-06-16 (-6d) | 28.25d → 33.75d |
| TAEXCCCL010004 | Pole Installation with IP Outdoor CCTV POE Camera | 2027-06-22 → 2027-06-16 (-6d) | 2027-07-10 → 2027-07-04 (-6d) | 28.25d → 33.75d |
| 17 | **Potable Networks** |  | 2027-03-31 → 2027-03-30 (-1d) |  |
| TAEXPTCL010002 | Bedding Works |  | 2026-11-14 → 2026-11-21 (+7d) | 73.38d → 67.38d |
| TAEXPTCL010004 | Backfilling Works for Trench |  | 2027-01-28 → 2027-01-27 (-1d) | 119.9d → 123.7d |
| TAEXPTCL0100011 | Excavation works for Trench Part 01 |  | 2026-11-09 → 2026-11-16 (+7d) | 3.14d → -1.56d |
| TAEXPTCL010007 | Valve Chamber works |  | 2027-03-28 → 2027-03-27 (-1d) | 63.7d → 75.5d |
| TAEXPTCL010005 | Install Valves with fittings |  | 2027-01-31 → 2027-01-30 (-1d) | 119.9d → 123.7d |
| TAEXPTCL010006 | Install fire hydrent |  | 2027-01-26 → 2027-01-25 (-1d) | 96.9d → 109.3d |
| TAEXPTCL010008 | Inspection Test |  | 2027-03-31 → 2027-03-30 (-1d) | 108.7d → 109.3d |
| 3 | **TSE Networks** |  | 2027-05-02 → 2027-04-13 (-19d) |  |
| TAEXTSCL010002 | Bedding Works |  | 2026-11-14 → 2026-11-21 (+7d) | 73.38d → 67.38d |
| TAEXTSCL010003 | Install Pipes & Fittings |  | 2027-04-24 → 2027-04-05 (-19d) | 60.42d → 83.97d |
| TAEXTSCL010004 | Backfilling Works for Trench |  | 2027-04-28 → 2027-04-10 (-18d) | 60.42d → 83.97d |
| TAEXTSCL0100011 | Excavation works for Trench Part 01 |  | 2026-11-12 → 2026-11-19 (+7d) | 30.8d → 27d |
| TAEXTSCL010006 | Valve Chamber works |  | 2027-05-01 → 2027-04-12 (-19d) | 91.23d → 107.23d |
| TAEXTSCL010005 | Install Valves with fittings |  | 2027-04-28 → 2027-04-10 (-18d) | 60.42d → 83.97d |
| TAEXTSCL010007 | Inspection Test |  | 2027-05-02 → 2027-04-13 (-19d) | 91.23d → 107.23d |
| 13 | **Sewerage Networks** |  | 2026-12-30 → 2027-01-06 (+7d) |  |
| TAEXSWCL0100011 | Excavation works for Trench Part 01 |  | 2026-11-17 → 2026-11-24 (+7d) | 139.3d → 134.5d |
| TAEXSWCL0100021 | Bedding Works Part 01 |  | 2026-11-18 → 2026-11-25 (+7d) | 183d → 177d |
| TAEXSWCL0100031 | Install GRP Pipes & Fittings Part 01 |  | 2026-11-28 → 2026-12-05 (+7d) | 183d → 177d |
| TAEXSWCL0100051 | Manhole Installation with backfilling Part 01 |  | 2026-12-29 → 2027-01-05 (+7d) | 181d → 175d |
| TAEXSWCL0100041 | Backfilling Works for Trench Part 01 |  | 2026-12-15 → 2026-12-22 (+7d) | 183d → 177d |
| TAEXSWCL010006 | Leakage Test |  | 2026-12-30 → 2027-01-06 (+7d) | 181d → 175d |
| 4 | **Storm Networks** |  | 2026-12-13 → 2026-12-20 (+7d) |  |
| TAEXSTCL0100051 | Manhole Installation with backfilling Part 01 |  | 2026-11-30 → 2026-12-07 (+7d) | 68.24d → 62.24d |
| TAEXSTCL0100011 | Excavation works for Trench & Box Culvert Part 01 |  | 2026-11-10 → 2026-11-17 (+7d) | 24.78d → 25.62d |
| TAEXSTCL010006 | Install Catch Basin with UPVC Pipes & Fittings |  | 2026-12-06 → 2026-12-13 (+7d) | 68.24d → 62.24d |
| TAEXSTCL0100041 | Backfilling Works for Trench and Boxculvert Part 01 |  | 2026-11-15 → 2026-11-22 (+7d) | 79.88d → 73.88d |
| TAEXSTCL0100021 | Bedding Works Part 01 |  | 2026-11-14 → 2026-11-21 (+7d) | 73.38d → 67.38d |
| TAEXSTCL0100031 | Install GRP Pipes & Fittings Part 01 |  | 2026-11-15 → 2026-11-22 (+7d) | 73.38d → 67.38d |
| TAEXSTCL010007 | Leakage Test |  | 2026-12-13 → 2026-12-20 (+7d) | 68.24d → 62.24d |
| 5 | **Local Road 06** |  | 2027-08-18 → 2027-08-01 (-17d) |  |
| 12 | **Road Works** |  | 2027-06-23 → 2027-06-29 (+6d) |  |
| TAEXRDCL0600031 | Subgrade Works Part 01 | 2027-02-17 → 2027-02-21 (+4d) | 2027-02-22 → 2027-02-24 (+2d) | 43.4d → 41d |
| TAEXRDCL060004 | ABC aggregate Base Course Works | 2027-02-22 → 2027-02-25 (+3d) | 2027-03-03 → 2027-03-06 (+3d) | 43.4d → 41d |
| TAEXRDCL060005 | MBC1 layer | 2027-03-03 → 2027-03-07 (+4d) | 2027-03-04 → 2027-03-07 (+3d) | 43.4d → 41d |
| TAEXRDCL060006 | BBC Base Course | 2027-03-04 → 2027-03-08 (+4d) | 2027-03-11 → 2027-03-14 (+3d) | 43.4d → 41d |
| TAEXRDCL060008 | Precast Concret Kerps | 2027-04-27 → 2027-05-03 (+6d) | 2027-05-18 → 2027-05-24 (+6d) | 3.14d → -1.56d |
| TAEXRDCL060007 | BWC Asphalt Wearing Course with RC | 2027-05-18 → 2027-05-24 (+6d) | 2027-05-20 → 2027-05-26 (+6d) | 34.14d → 29.44d |
| TAEXRDCL060009 | Precast Interlock Works | 2027-05-20 → 2027-05-26 (+6d) | 2027-06-06 → 2027-06-12 (+6d) | 34.14d → 29.44d |
| TAEXRDCL060010 | Stone Paving works | 2027-06-06 → 2027-06-12 (+6d) | 2027-06-20 → 2027-06-26 (+6d) | 34.14d → 29.44d |
| TAEXRDCL060011 | Road Marking | 2027-06-20 → 2027-06-26 (+6d) | 2027-06-21 → 2027-06-27 (+6d) | 34.14d → 29.44d |
| TAEXRDCL060012 | Traffic Sinage | 2027-06-21 → 2027-06-27 (+6d) | 2027-06-23 → 2027-06-29 (+6d) | 34.14d → 29.44d |
| 1 | **Electrical Works** | 2027-05-16 → 2027-04-28 (-18d) | 2027-08-18 → 2027-08-01 (-17d) |  |
| TAEXELCL060001 | Trench Cut off | 2027-05-16 → 2027-04-28 (-18d) | 2027-05-27 → 2027-05-10 (-17d) | -27.25d → -8.88d |
| TAEXELCL060002 | Drawpit and PVC Pipes Installation | 2027-05-27 → 2027-05-10 (-17d) | 2027-06-02 → 2027-05-16 (-17d) | -21.1d → -6.23d |
| TAEXELCL060003 | Road Crossing Ducts | 2027-06-02 → 2027-05-16 (-17d) | 2027-06-05 → 2027-05-18 (-18d) | -21.1d → -6.23d |
| TAEXELCL060006 | Poles RC Foundation | 2027-06-02 → 2027-05-16 (-17d) | 2027-06-07 → 2027-05-20 (-18d) | 38.9d → 53.77d |
| TAEXELCL060004 | Trench Backfilling | 2027-06-05 → 2027-05-18 (-18d) | 2027-06-21 → 2027-06-03 (-18d) | -21.1d → -6.23d |
| TAEXELCL060008 | Lighting Pole Installation with Luminares | 2027-06-07 → 2027-05-20 (-18d) | 2027-06-14 → 2027-05-27 (-18d) | 41.9d → 56.77d |
| TAEXELCL060005 | Cables Pulling | 2027-08-12 → 2027-07-26 (-17d) | 2027-08-16 → 2027-07-29 (-18d) | -21.1d → -6.23d |
| TAEXELCL060007 | Earthing cables | 2027-08-16 → 2027-07-29 (-18d) | 2027-08-18 → 2027-08-01 (-17d) | -21.1d → -6.23d |
| 2 | **Telecommunication Works** | 2027-05-18 → 2027-05-24 (+6d) | 2027-06-23 → 2027-06-29 (+6d) |  |
| TAEXTCCL060001 | Trench Cut off | 2027-05-18 → 2027-05-24 (+6d) | 2027-05-30 → 2027-06-05 (+6d) | -15.61d → -20.11d |
| TAEXTCCL060002 | Drawpit and PVC Pipes Installation | 2027-05-30 → 2027-06-05 (+6d) | 2027-06-05 → 2027-06-10 (+5d) | -8.87d → -13.37d |
| TAEXTCCL060003 | Road Crossing Ducts | 2027-06-05 → 2027-06-10 (+5d) | 2027-06-07 → 2027-06-13 (+6d) | 32.13d → 27.63d |
| TAEXTCCL060004 | Trench Backfilling | 2027-06-07 → 2027-06-13 (+6d) | 2027-06-23 → 2027-06-29 (+6d) | 32.13d → 27.63d |
| 17 | **CCTV Works** | 2027-05-26 → 2027-05-20 (-6d) | 2027-07-24 → 2027-07-18 (-6d) |  |
| TAEXCCCL060001 | Pipe Installation with manhole | 2027-05-26 → 2027-05-20 (-6d) | 2027-06-09 → 2027-06-03 (-6d) | -30.75d → -25.25d |
| TAEXCCCL060002 | CCTV Swiches Lighting panels Installation | 2027-06-09 → 2027-06-03 (-6d) | 2027-06-24 → 2027-06-19 (-5d) | 16.25d → 21.75d |
| TAEXCCCL060003 | Cable laying and connected with Panels | 2027-06-24 → 2027-06-19 (-5d) | 2027-07-06 → 2027-06-30 (-6d) | 16.25d → 21.75d |
| TAEXCCCL060004 | Pole Installation with IP Outdoor CCTV POE Camera | 2027-07-06 → 2027-06-30 (-6d) | 2027-07-24 → 2027-07-18 (-6d) | 16.25d → 21.75d |

| ID | Task | Start | Finish | Complete | Total float |
| --- | --- | --- | --- | --- | --- |
| 16 | **Potable Networks** |  | 2027-03-30 → 2027-01-26 (-63d) |  |  |
| TAEXPTCL060007 | Valve Chamber works |  | 2027-03-30 → 2026-11-15 A (-135d) | 85% → 100% | 63.7d → none |
| TAEXPTCL060005 | Install Valves with fittings |  | 2027-02-20 → 2026-11-15 A (-97d) | 90% → 100% | 115.79d → none |
| TAEXPTCL060006 | Install fire hydrent |  | 2027-02-22 → 2026-11-14 A (-100d) | 90% → 100% | 92.72d → none |
| 3 | **TSE Networks** |  | 2027-05-19 → 2027-04-15 (-34d) |  |  |
| TAEXTSCL060004 | Backfilling Works for Trench |  | 2027-04-28 → 2027-04-10 (-18d) |  | 62.42d → 84.57d |
| TAEXTSCL060007 | Inspection Test |  | 2027-05-19 → 2027-04-15 (-34d) |  | 73.43d → 102.83d |
| TAEXTSCL060006 | Valve Chamber works |  | 2027-05-18 → 2027-04-13 (-35d) | 50% → 85% | 73.43d → 102.83d |
| TAEXTSCL060005 | Install Valves with fittings |  | 2027-05-01 → 2027-04-11 (-20d) | 50% → 85% | 60.42d → 83.97d |
| 14 | **Sewerage Networks** |  | 2027-02-18 → 2027-02-22 (+4d) |  |  |
| TAEXSWCL060006 | Leakage Test |  | 2027-02-18 → 2027-02-22 (+4d) |  | 138.05d → 135.65d |
| TAEXSWCL0600031 | Install GRP Pipes & Fittings Part 01 |  | 2026-11-10 → 2026-11-16 (+6d) | 75% → 90% | 208.4d → 203.15d |
| TAEXSWCL0600051 | Manhole Installation with backfilling Part 01 |  | 2026-12-24 → 2026-12-29 (+5d) | 55% → 75% | 185.6d → 181.4d |
| TAEXSWCL0600041 | Backfilling Works for Trench Part 01 | 2026-11-16 → 2026-11-22 (+6d) | 2026-11-28 → 2026-12-03 (+5d) |  | 208.4d → 203.15d |
| 4 | **Storm Networks** |  | 2027-02-17 → 2027-02-20 (+3d) |  |  |
| TAEXSTCL060001 | Excavation works for Trench |  | 2026-11-11 → 2026-11-17 (+6d) | 94% → 98% | 24.78d → 25.62d |
| TAEXSTCL060002 | Bedding Works |  | 2026-11-21 → 2026-11-28 (+7d) | 94% → 98% | 87.42d → 85.54d |
| TAEXSTCL060003 | Install GRP Pipes & Fittings |  | 2026-11-21 → 2026-11-28 (+7d) | 94% → 98% | 87.42d → 85.54d |
| TAEXSTCL060005 | Manhole Installation with backfilling |  | 2026-12-20 → 2026-12-27 (+7d) | 85% → 90% | 87.42d → 85.54d |
| TAEXSTCL060004 | Backfilling Works for Trench |  | 2026-12-08 → 2026-12-15 (+7d) |  | 87.42d → 85.54d |
| TAEXSTCL060007 | Leakage Test |  | 2027-02-17 → 2027-02-20 (+3d) |  | 43.4d → 41d |
| TAEXSTCL060006 | Install Catch Basin with UPVC Pipes & Fittings |  | 2027-02-16 → 2027-02-18 (+2d) | 55% → 85% | 43.4d → 41d |
| 2 | **Local Road 07** |  | 2027-08-21 → 2027-08-03 (-18d) |  |  |
| 12 | **Road Works** |  | 2027-07-28 → 2027-08-03 (+6d) |  |  |
| TAEXRDCL070004 | ABC aggregate Base Course Works | 2027-03-30 → 2027-04-04 (+5d) | 2027-04-03 → 2027-04-07 (+4d) |  | 37.14d → 35.36d |
| TAEXRDCL070005 | MBC1 layer | 2027-04-03 → 2027-04-07 (+4d) | 2027-04-04 → 2027-04-08 (+4d) |  | 37.14d → 35.36d |
| TAEXRDCL070006 | BBC Base Course | 2027-04-04 → 2027-04-08 (+4d) | 2027-04-06 → 2027-04-11 (+5d) |  | 37.14d → 35.36d |
| TAEXRDCL070008 | Precast Concret Kerps | 2027-05-18 → 2027-05-24 (+6d) | 2027-06-08 → 2027-06-14 (+6d) |  | 3.14d → -1.56d |
| TAEXRDCL070007 | BWC Asphalt Wearing Course with RC | 2027-06-08 → 2027-06-14 (+6d) | 2027-06-09 → 2027-06-15 (+6d) |  | 4.14d → -0.56d |
| TAEXRDCL070009 | Precast Interlock Works | 2027-06-19 → 2027-06-24 (+5d) | 2027-07-07 → 2027-07-13 (+6d) |  | 4.14d → -0.56d |
| TAEXRDCL070010 | Stone Paving works | 2027-07-07 → 2027-07-13 (+6d) | 2027-07-25 → 2027-07-31 (+6d) |  | 4.14d → -0.56d |
| TAEXRDCL070011 | Road Marking | 2027-07-25 → 2027-07-31 (+6d) | 2027-07-26 → 2027-08-01 (+6d) |  | 4.14d → -0.56d |
| TAEXRDCL070012 | Traffic Sinage | 2027-07-26 → 2027-08-01 (+6d) | 2027-07-28 → 2027-08-03 (+6d) |  | 4.14d → -0.56d |
| 1 | **Electrical Works** | 2027-05-27 → 2027-05-10 (-17d) | 2027-08-21 → 2027-08-03 (-18d) |  |  |
| TAEXELCL070001 | Trench Cut off | 2027-05-27 → 2027-05-10 (-17d) | 2027-06-10 → 2027-05-24 (-17d) |  | -27.25d → -8.88d |
| TAEXELCL070002 | Drawpit and PVC Pipes Installation | 2027-06-10 → 2027-05-24 (-17d) | 2027-06-20 → 2027-06-02 (-18d) |  | 14.9d → 29.77d |
| TAEXELCL070003 | Road Crossing Ducts | 2027-06-20 → 2027-06-02 (-18d) | 2027-06-22 → 2027-06-05 (-17d) |  | 14.9d → 29.77d |
| TAEXELCL070006 | Poles RC Foundation | 2027-06-20 → 2027-06-02 (-18d) | 2027-06-23 → 2027-06-06 (-17d) |  | 26.9d → 41.77d |
| TAEXELCL070004 | Trench Backfilling | 2027-06-22 → 2027-06-05 (-17d) | 2027-07-04 → 2027-06-16 (-18d) |  | 14.9d → 29.77d |
| TAEXELCL070008 | Lighting Pole Installation with Luminares | 2027-06-23 → 2027-06-06 (-17d) | 2027-06-29 → 2027-06-12 (-17d) |  | 28.9d → 43.77d |
| TAEXELCL070005 | Cables Pulling | 2027-07-04 → 2027-06-16 (-18d) | 2027-07-07 → 2027-06-20 (-17d) |  | 14.9d → 29.77d |
| TAEXELCL070007 | Earthing cables | 2027-08-18 → 2027-08-01 (-17d) | 2027-08-21 → 2027-08-03 (-18d) |  | -21.1d → -6.23d |
| 2 | **Telecommunication Works** | 2027-05-30 → 2027-06-05 (+6d) | 2027-06-24 → 2027-06-30 (+6d) |  |  |
| TAEXTCCL070001 | Trench Cut off | 2027-05-30 → 2027-06-05 (+6d) | 2027-06-06 → 2027-06-12 (+6d) |  | -15.61d → -20.11d |
| TAEXTCCL070002 | Drawpit and PVC Pipes Installation | 2027-06-06 → 2027-06-12 (+6d) | 2027-06-10 → 2027-06-16 (+6d) |  | -9.61d → -14.11d |
| TAEXTCCL070003 | Road Crossing Ducts | 2027-06-10 → 2027-06-16 (+6d) | 2027-06-13 → 2027-06-19 (+6d) |  | 31.39d → 26.89d |
| TAEXTCCL070004 | Trench Backfilling | 2027-06-13 → 2027-06-19 (+6d) | 2027-06-24 → 2027-06-30 (+6d) |  | 31.39d → 26.89d |
| 18 | **CCTV Works** | 2027-06-09 → 2027-06-03 (-6d) | 2027-07-31 → 2027-07-25 (-6d) |  |  |
| TAEXCCCL070001 | Pipe Installation with manhole | 2027-06-09 → 2027-06-03 (-6d) | 2027-06-20 → 2027-06-14 (-6d) |  | -30.75d → -25.25d |
| TAEXCCCL070002 | CCTV Swiches Lighting panels Installation | 2027-06-20 → 2027-06-14 (-6d) | 2027-07-04 → 2027-06-28 (-6d) |  | 10.25d → 15.75d |
| TAEXCCCL070003 | Cable laying and connected with Panels | 2027-07-04 → 2027-06-28 (-6d) | 2027-07-15 → 2027-07-10 (-5d) |  | 10.25d → 15.75d |
| TAEXCCCL070004 | Pole Installation with IP Outdoor CCTV POE Camera | 2027-07-15 → 2027-07-10 (-5d) | 2027-07-31 → 2027-07-25 (-6d) |  | 10.25d → 15.75d |
| 3 | **Potable Networks** |  | 2027-04-20 → 2027-04-17 (-3d) |  |  |
| TAEXPTCL070003 | Install Pipes & Fittings |  | 2027-01-31 → 2026-11-15 A (-77d) | 44% → 100% | 92.72d → none |
| TAEXPTCL070004 | Backfilling Works for Trench |  | 2027-02-08 → 2027-02-02 (-6d) |  | 115.79d → 121.27d |
| TAEXPTCL070005 | Install Valves with fittings |  | 2027-02-08 → 2027-02-02 (-6d) | 15% → 85% | 115.79d → 121.27d |
| TAEXPTCL070006 | Install fire hydrent | 2027-01-31 → 2027-01-25 (-6d) | 2027-02-06 → 2027-01-31 (-6d) |  | 92.72d → 109.3d |
| TAEXPTCL070007 | Valve Chamber works | 2027-03-30 → 2027-03-27 (-3d) | 2027-04-15 → 2027-04-12 (-3d) |  | 63.7d → 75.5d |
| TAEXPTCL070008 | Inspection Test | 2027-04-15 → 2027-04-12 (-3d) | 2027-04-20 → 2027-04-17 (-3d) |  | 91.5d → 94.5d |
| 4 | **TSE Networks** |  | 2027-05-26 → 2027-04-15 (-41d) |  |  |
| TAEXTSCL070005 | Install Valves with fittings |  | 2027-05-06 → 2027-04-13 (-23d) | 15% → 85% | 60.42d → 95.12d |
| TAEXTSCL070006 | Valve Chamber works |  | 2027-05-22 → 2027-04-15 (-37d) | 15% → 85% | 60.42d → 95.12d |
| TAEXTSCL070007 | Inspection Test | 2027-05-22 → 2026-11-12 A (-191d) | 2027-05-26 → 2026-11-14 A (-193d) | 0% → 100% | 60.42d → none |
| TAEXTSCL0700041 | Backfilling Works for Trench Part 01 | 2026-11-12 → 2026-11-19 (+7d) | 2026-11-22 → 2026-11-29 (+7d) |  | 175.67d → 170.07d |
| 5 | **Storm Networks** |  | 2027-02-11 → 2027-02-16 (+5d) |  |  |
| TAEXSTCL070007 | Leakage Test |  | 2027-02-11 → 2026-11-15 A (-88d) | 50% → 100% | 37.14d → none |
| TAEXSTCL0700041 | Backfilling Works for Trench Part 01 | 2026-11-18 → 2026-11-17 (-1d) | 2026-11-28 → 2026-11-26 (-2d) |  | 80.62d → 85.68d |
| TAEXSTCL070006 | Install Catch Basin with UPVC Pipes & Fittings | 2027-01-30 → 2027-02-06 (+7d) | 2027-02-09 → 2027-02-16 (+7d) |  | 37.14d → 35.36d |
| 6 | **Local Road 08** |  | 2027-08-23 → 2027-08-07 (-16d) |  |  |
| 12 | **Road Works** |  | 2027-07-27 → 2027-08-02 (+6d) |  |  |

| ID | Task | Start | Finish | Complete | Total float |
| --- | --- | --- | --- | --- | --- |
| TAEXRDCL0800011 | Road Excavation and Disposal Part 01 | 2027-02-17 → 2027-02-21 (+4d) | 2027-02-23 → 2027-02-25 (+2d) |  | 53.04d → 52.86d |
| TAEXRDCL0800021 | Backfilling Works for Road Part 01 | 2027-02-23 → 2027-02-27 (+4d) | 2027-03-03 → 2027-03-06 (+3d) |  | 53.04d → 52.86d |
| TAEXRDCL0800031 | Subgrade Works Part 01 | 2027-03-03 → 2027-03-07 (+4d) | 2027-03-08 → 2027-03-10 (+2d) |  | 53.04d → 52.86d |
| TAEXRDCL080004 | ABC aggregate Base Course Works | 2027-03-08 → 2027-03-11 (+3d) | 2027-03-13 → 2027-03-15 (+2d) |  | 53.04d → 52.86d |
| TAEXRDCL080005 | MBC1 layer | 2027-03-13 → 2027-03-16 (+3d) | 2027-03-14 → 2027-03-16 (+2d) |  | 53.04d → 52.86d |
| TAEXRDCL080006 | BBC Base Course | 2027-03-14 → 2027-03-17 (+3d) | 2027-03-18 → 2027-03-21 (+3d) |  | 53.04d → 52.86d |
| TAEXRDCL080008 | Precast Concret Kerps | 2027-06-08 → 2027-06-14 (+6d) | 2027-06-24 → 2027-06-30 (+6d) |  | 3.14d → -1.56d |
| TAEXRDCL080007 | BWC Asphalt Wearing Course with RC | 2027-06-24 → 2027-06-30 (+6d) | 2027-06-26 → 2027-07-01 (+5d) |  | 5.14d → 0.44d |
| TAEXRDCL080009 | Precast Interlock Works | 2027-06-26 → 2027-07-01 (+5d) | 2027-07-15 → 2027-07-21 (+6d) |  | 5.14d → 0.44d |
| TAEXRDCL080010 | Stone Paving works | 2027-07-15 → 2027-07-21 (+6d) | 2027-07-24 → 2027-07-29 (+5d) |  | 5.14d → 0.44d |
| TAEXRDCL080011 | Road Marking | 2027-07-24 → 2027-07-29 (+5d) | 2027-07-25 → 2027-07-31 (+6d) |  | 5.14d → 0.44d |
| TAEXRDCL080012 | Traffic Sinage | 2027-07-25 → 2027-07-31 (+6d) | 2027-07-27 → 2027-08-02 (+6d) |  | 5.14d → 0.44d |
| 1 | **Electrical Works** |  | 2027-08-23 → 2027-08-05 (-18d) |  |  |
| TAEXELCL080001 | Trench Cut off | 2027-06-10 → 2027-05-24 (-17d) | 2027-06-22 → 2027-06-05 (-17d) |  | -27.25d → -8.88d |
| TAEXELCL080002 | Drawpit and PVC Pipes Installation | 2027-06-22 → 2027-06-05 (-17d) | 2027-06-28 → 2027-06-10 (-18d) |  | 5.9d → 20.77d |
| TAEXELCL080003 | Road Crossing Ducts | 2027-06-28 → 2027-06-10 (-18d) | 2027-06-30 → 2027-06-13 (-17d) |  | 5.9d → 20.77d |
| TAEXELCL080006 | Poles RC Foundation | 2027-06-28 → 2027-06-10 (-18d) | 2027-07-03 → 2027-06-15 (-18d) |  | 19.9d → 34.77d |
| TAEXELCL080004 | Trench Backfilling | 2027-06-30 → 2027-06-13 (-17d) | 2027-07-17 → 2027-06-29 (-18d) |  | 5.9d → 20.77d |
| TAEXELCL080008 | Lighting Pole Installation with Luminares | 2027-07-03 → 2027-06-15 (-18d) | 2027-07-10 → 2027-06-22 (-18d) |  | 19.9d → 34.77d |
| TAEXELCL080005 | Cables Pulling | 2027-07-17 → 2027-06-29 (-18d) | 2027-07-20 → 2027-07-03 (-17d) |  | 5.9d → 20.77d |
| TAEXELCL080007 | Earthing cables | 2027-08-21 → 2027-08-03 (-18d) | 2027-08-23 → 2027-08-05 (-18d) |  | -21.1d → -6.23d |
| 2 | **Telecommunication Works** | 2027-06-06 → 2027-06-12 (+6d) | 2027-07-12 → 2027-07-18 (+6d) |  |  |
| TAEXTCCL080001 | Trench Cut off | 2027-06-06 → 2027-06-12 (+6d) | 2027-06-17 → 2027-06-23 (+6d) |  | -15.61d → -20.11d |
| TAEXTCCL080002 | Drawpit and PVC Pipes Installation | 2027-06-17 → 2027-06-23 (+6d) | 2027-06-23 → 2027-06-29 (+6d) |  | -15.61d → -20.11d |
| TAEXTCCL080003 | Road Crossing Ducts | 2027-06-23 → 2027-06-29 (+6d) | 2027-06-26 → 2027-07-01 (+5d) |  | 16.39d → 11.89d |
| TAEXTCCL080004 | Trench Backfilling | 2027-06-26 → 2027-07-01 (+5d) | 2027-07-12 → 2027-07-18 (+6d) |  | 16.39d → 11.89d |
| 19 | **CCTV Works** | 2027-06-20 → 2027-06-14 (-6d) | 2027-08-12 → 2027-08-07 (-5d) |  |  |
| TAEXCCCL080001 | Pipe Installation with manhole | 2027-06-20 → 2027-06-14 (-6d) | 2027-06-29 → 2027-06-23 (-6d) |  | -30.75d → -25.25d |
| TAEXCCCL080002 | CCTV Swiches Lighting panels Installation | 2027-06-29 → 2027-06-23 (-6d) | 2027-07-14 → 2027-07-08 (-6d) |  | -0.75d → 4.75d |
| TAEXCCCL080003 | Cable laying and connected with Panels | 2027-07-14 → 2027-07-08 (-6d) | 2027-07-26 → 2027-07-20 (-6d) |  | -0.75d → 4.75d |
| TAEXCCCL080004 | Pole Installation with IP Outdoor CCTV POE Camera | 2027-07-26 → 2027-07-20 (-6d) | 2027-08-12 → 2027-08-07 (-5d) |  | -0.75d → 4.75d |
| 3 | **Potable Networks** |  | 2027-05-05 → 2027-04-21 (-14d) |  |  |
| TAEXPTCL080001 | Excavation works for Trench |  | 2026-11-21 → 2026-11-28 (+7d) |  | 63.7d → 75.5d |
| TAEXPTCL080003 | Install Pipes & Fittings |  | 2027-02-02 → 2027-01-26 (-7d) | 75% → 90% | 119.52d → 125.8d |
| TAEXPTCL080002 | Bedding Works |  | 2026-11-22 → 2026-11-29 (+7d) | 75% → 90% | 167.05d → 173.75d |
| TAEXPTCL080006 | Install fire hydrent |  | 2027-02-28 → 2027-02-21 (-7d) |  | 104.02d → 118.2d |
| TAEXPTCL080007 | Valve Chamber works |  | 2027-05-01 → 2027-04-17 (-14d) | 20% → 75% | 63.7d → 75.5d |
| TAEXPTCL080004 | Backfilling Works for Trench | 2027-02-02 → 2027-01-26 (-7d) | 2027-02-20 → 2027-02-13 (-7d) |  | 119.52d → 125.8d |
| TAEXPTCL080005 | Install Valves with fittings | 2027-02-20 → 2027-02-13 (-7d) | 2027-02-24 → 2027-02-17 (-7d) |  | 115.79d → 121.27d |
| TAEXPTCL080008 | Inspection Test | 2027-05-01 → 2027-04-17 (-14d) | 2027-05-05 → 2027-04-21 (-14d) |  | 74.7d → 86.5d |
| 4 | **TSE Networks** |  | 2027-05-10 → 2027-04-26 (-14d) |  |  |
| TAEXTSCL080001 | Excavation works for Trench |  | 2026-11-16 → 2026-11-23 (+7d) |  | 54.7d → 70.7d |
| TAEXTSCL080005 | Install Valves with fittings |  | 2026-12-14 → 2026-12-21 (+7d) |  | 182.9d → 177.2d |
| TAEXTSCL080006 | Valve Chamber works |  | 2026-12-30 → 2027-01-05 (+6d) |  | 182.9d → 177.2d |
| TAEXTSCL080002 | Bedding Works |  | 2026-11-23 → 2026-11-29 (+6d) |  | 167.05d → 173.75d |
| TAEXTSCL080003 | Install Pipes & Fittings |  | 2026-11-26 → 2026-12-03 (+7d) |  | 167.05d → 173.75d |
| TAEXTSCL080004 | Backfilling Works for Trench | 2026-11-26 → 2026-12-03 (+7d) | 2026-12-14 → 2026-12-21 (+7d) |  | 182.9d → 177.2d |
| TAEXTSCL080007 | Inspection Test | 2027-05-05 → 2027-04-21 (-14d) | 2027-05-10 → 2027-04-26 (-14d) |  | 74.7d → 86.5d |
| 16 | **Sewerage Networks** |  | 2026-12-20 → 2026-12-27 (+7d) |  |  |
| TAEXSWCL0800051 | Manhole Installation with backfilling Part 01 |  | 2026-12-20 → 2026-12-27 (+7d) |  | 190d → 184d |
| 5 | **Storm Networks** |  | 2026-12-21 → 2026-12-20 (-1d) |  |  |
| TAEXSTCL0800051 | Manhole Installation with backfilling Part 01 |  | 2026-12-09 → 2026-12-08 (-1d) |  | 24.78d → 25.62d |
| TAEXSTCL0800041 | Backfilling Works for Trench Part 01 |  | 2026-11-28 → 2026-11-26 (-2d) |  | 24.78d → 25.62d |
| TAEXSTCL080006 | Install Catch Basin with UPVC Pipes & Fittings |  | 2026-12-21 → 2026-12-20 (-1d) |  | 24.78d → 25.62d |
| 3 | **Local Road 09** |  | 2027-08-25 → 2027-08-08 (-17d) |  |  |
| 12 | **Road Works** |  | 2027-07-29 → 2027-08-04 (+6d) |  |  |
| TAEXRDCL090008 | Precast Concret Kerps | 2027-06-24 → 2027-06-30 (+6d) | 2027-07-10 → 2027-07-15 (+5d) |  | 3.14d → -1.56d |
| TAEXRDCL090007 | BWC Asphalt Wearing Course with RC | 2027-07-10 → 2027-07-15 (+5d) | 2027-07-11 → 2027-07-17 (+6d) |  | 3.14d → -1.56d |
| TAEXRDCL090009 | Precast Interlock Works | 2027-07-11 → 2027-07-17 (+6d) | 2027-07-25 → 2027-07-31 (+6d) |  | 3.14d → -1.56d |
| TAEXRDCL090010 | Stone Paving works | 2027-07-25 → 2027-07-31 (+6d) | 2027-07-27 → 2027-08-02 (+6d) |  | 3.14d → -1.56d |
| TAEXRDCL090011 | Road Marking | 2027-07-27 → 2027-08-02 (+6d) | 2027-07-28 → 2027-08-03 (+6d) |  | 3.14d → -1.56d |
| TAEXRDCL090012 | Traffic Sinage | 2027-07-28 → 2027-08-03 (+6d) | 2027-07-29 → 2027-08-04 (+6d) |  | 3.14d → -1.56d |
| 1 | **Electrical Works** | 2027-06-22 → 2027-06-05 (-17d) | 2027-08-25 → 2027-08-08 (-17d) |  |  |
| TAEXELCL090001 | Trench Cut off | 2027-06-22 → 2027-06-05 (-17d) | 2027-07-05 → 2027-06-17 (-18d) |  | -27.25d → -8.88d |
| TAEXELCL090002 | Drawpit and PVC Pipes Installation | 2027-07-05 → 2027-06-17 (-18d) | 2027-07-15 → 2027-06-28 (-17d) |  | -2.1d → 12.77d |
| TAEXELCL090003 | Road Crossing Ducts | 2027-07-15 → 2027-06-28 (-17d) | 2027-07-18 → 2027-06-30 (-18d) |  | -2.1d → 12.77d |
| TAEXELCL090006 | Poles RC Foundation | 2027-07-15 → 2027-06-28 (-17d) | 2027-07-19 → 2027-07-01 (-18d) |  | 7.9d → 22.77d |
| TAEXELCL090004 | Trench Backfilling | 2027-07-18 → 2027-06-30 (-18d) | 2027-07-29 → 2027-07-12 (-17d) |  | -2.1d → 12.77d |
| TAEXELCL090008 | Lighting Pole Installation with Luminares | 2027-07-19 → 2027-07-01 (-18d) | 2027-07-24 → 2027-07-06 (-18d) |  | 7.9d → 22.77d |
| TAEXELCL090005 | Cables Pulling | 2027-07-29 → 2027-07-12 (-17d) | 2027-08-01 → 2027-07-14 (-18d) |  | -2.1d → 12.77d |

| ID | Task | Start | Finish | Complete | Total float |
| --- | --- | --- | --- | --- | --- |
| TAEXELCL090007 | Earthing cables | 2027-08-23 → 2027-08-05 (-18d) | 2027-08-25 → 2027-08-08 (-17d) |  | -21.1d → -6.23d |
| 2 | **Telecommunication Works** | 2027-06-17 → 2027-06-23 (+6d) | 2027-07-12 → 2027-07-18 (+6d) |  |  |
| TAEXTCCL090001 | Trench Cut off | 2027-06-17 → 2027-06-23 (+6d) | 2027-06-23 → 2027-06-29 (+6d) |  | -15.61d → -20.11d |
| TAEXTCCL090002 | Drawpit and PVC Pipes Installation | 2027-06-23 → 2027-06-29 (+6d) | 2027-06-28 → 2027-07-04 (+6d) |  | -15.61d → -20.11d |
| TAEXTCCL090003 | Road Crossing Ducts | 2027-06-28 → 2027-07-04 (+6d) | 2027-06-30 → 2027-07-06 (+6d) |  | 16.39d → 11.89d |
| TAEXTCCL090004 | Trench Backfilling | 2027-06-30 → 2027-07-06 (+6d) | 2027-07-12 → 2027-07-18 (+6d) |  | 16.39d → 11.89d |
| 20 | **CCTV Works** | 2027-06-29 → 2027-06-23 (-6d) | 2027-08-11 → 2027-08-05 (-6d) |  |  |
| TAEXCCCL090001 | Pipe Installation with manhole | 2027-06-29 → 2027-06-23 (-6d) | 2027-07-07 → 2027-07-01 (-6d) |  | -30.75d → -25.25d |
| TAEXCCCL090002 | CCTV Swiches Lighting panels Installation | 2027-07-07 → 2027-07-01 (-6d) | 2027-07-19 → 2027-07-13 (-6d) |  | 0.25d → 5.75d |
| TAEXCCCL090003 | Cable laying and connected with Panels | 2027-07-19 → 2027-07-13 (-6d) | 2027-07-28 → 2027-07-22 (-6d) |  | 0.25d → 5.75d |
| TAEXCCCL090004 | Pole Installation with IP Outdoor CCTV POE Camera | 2027-07-28 → 2027-07-22 (-6d) | 2027-08-11 → 2027-08-05 (-6d) |  | 0.25d → 5.75d |
| 3 | **Potable Networks** |  | 2027-05-20 → 2027-05-06 (-14d) |  |  |
| TAEXPTCL090005 | Install Valves with fittings |  | 2027-02-11 → 2027-02-04 (-7d) |  | 115.79d → 121.27d |
| TAEXPTCL090006 | Install fire hydrent | 2027-02-06 → 2027-01-31 (-6d) | 2027-02-13 → 2027-02-07 (-6d) |  | 92.72d → 109.3d |
| TAEXPTCL090007 | Valve Chamber works | 2027-05-01 → 2027-04-17 (-14d) | 2027-05-17 → 2027-05-03 (-14d) |  | 63.7d → 75.5d |
| TAEXPTCL090008 | Inspection Test | 2027-05-17 → 2027-05-03 (-14d) | 2027-05-20 → 2027-05-06 (-14d) |  | 65.7d → 77.5d |
| 4 | **TSE Networks** |  | 2027-05-19 → 2027-04-29 (-20d) |  |  |
| TAEXTSCL090005 | Install Valves with fittings |  | 2027-05-03 → 2027-04-13 (-20d) |  | 60.42d → 83.97d |
| TAEXTSCL090004 | Backfilling Works for Trench | 2026-11-26 → 2026-11-14 A (-12d) | 2026-12-10 → 2026-11-15 A (-25d) | 0% → 100% | 167.05d → none |
| TAEXTSCL090006 | Valve Chamber works | 2027-05-03 → 2027-04-13 (-20d) | 2027-05-19 → 2027-04-29 (-20d) |  | 66.57d → 83.97d |
| 5 | **Storm Networks** |  | 2027-01-12 → 2027-01-19 (+7d) |  |  |
| TAEXSTCL090006 | Install Catch Basin with UPVC Pipes & Fittings | 2027-01-03 → 2027-01-10 (+7d) | 2027-01-12 → 2027-01-19 (+7d) |  | 14.45d → 8.45d |
| 4 | **Upgrade Local 06** |  | 2027-08-31 → 2027-08-22 (-9d) |  |  |
| 22 | **Electrical Works** |  | 2027-08-31 → 2027-08-10 (-21d) |  |  |
| TAEXELCU060002 | Drawpit and PVC Pipes Installation |  | 2027-08-10 → 2027-07-19 (-22d) |  | -24.23d → -5.86d |
| TAEXELCU060003 | Road Crossing Ducts |  | 2027-08-12 → 2027-07-21 (-22d) |  | -24.23d → -5.86d |
| TAEXELCU060001 | Trench Cut off | 2027-07-25 → 2027-07-03 (-22d) | 2027-08-05 → 2027-07-14 (-22d) |  | -27.25d → -8.88d |
| TAEXELCU060006 | Poles RC Foundation | 2027-08-10 → 2027-07-19 (-22d) | 2027-08-15 → 2027-07-24 (-22d) |  | -17.22d → 1.15d |
| TAEXELCU060004 | Trench Backfilling | 2027-08-12 → 2027-07-21 (-22d) | 2027-08-24 → 2027-08-02 (-22d) |  | -24.23d → -5.86d |
| TAEXELCU060008 | Lighting Pole Installation with Luminares | 2027-08-15 → 2027-07-24 (-22d) | 2027-08-22 → 2027-07-31 (-22d) |  | -17.22d → 1.15d |
| TAEXELCU060005 | Cables Pulling | 2027-08-24 → 2027-08-02 (-22d) | 2027-08-29 → 2027-08-07 (-22d) |  | -24.23d → -5.86d |
| TAEXELCU060007 | Earthing cables | 2027-08-29 → 2027-08-08 (-21d) | 2027-08-31 → 2027-08-10 (-21d) |  | -24.23d → -6.23d |
| 23 | **CCTV Works** | 2027-07-15 → 2027-07-10 (-5d) | 2027-08-28 → 2027-08-22 (-6d) |  |  |
| TAEXCCCU060001 | Pipe Installation with manhole | 2027-07-15 → 2027-07-10 (-5d) | 2027-07-25 → 2027-07-19 (-6d) |  | -25.75d → -20.25d |
| TAEXCCCU060002 | CCTV Swiches Lighting panels Installation | 2027-07-25 → 2027-07-19 (-6d) | 2027-08-05 → 2027-07-31 (-5d) |  | -13.75d → -8.25d |
| TAEXCCCU060003 | Cable laying and connected with Panels | 2027-08-05 → 2027-07-31 (-5d) | 2027-08-16 → 2027-08-10 (-6d) |  | -13.75d → -8.25d |
| TAEXCCCU060004 | Pole Installation with IP Outdoor CCTV POE Camera | 2027-08-16 → 2027-08-10 (-6d) | 2027-08-28 → 2027-08-22 (-6d) |  | -13.75d → -8.25d |
| 7 | **Upgrade Local 07** |  | 2027-09-05 → 2027-08-31 (-5d) |  |  |
| 23 | **Electrical Works** |  | 2027-09-02 → 2027-08-12 (-21d) |  |  |
| TAEXELCU070003 | Road Crossing Ducts |  | 2027-08-18 → 2027-07-28 (-21d) |  | -24.76d → -6.39d |
| TAEXELCU070002 | Drawpit and PVC Pipes Installation |  | 2027-08-17 → 2027-07-26 (-22d) |  | -24.76d → -6.39d |
| TAEXELCU070001 | Trench Cut off | 2027-08-05 → 2027-07-14 (-22d) | 2027-08-14 → 2027-07-22 (-23d) |  | -27.25d → -8.88d |
| TAEXELCU070006 | Poles RC Foundation | 2027-08-17 → 2027-07-26 (-22d) | 2027-08-21 → 2027-07-29 (-23d) |  | -21.05d → -2.68d |
| TAEXELCU070004 | Trench Backfilling | 2027-08-18 → 2027-07-28 (-21d) | 2027-08-28 → 2027-08-07 (-21d) |  | -24.76d → -6.39d |
| TAEXELCU070008 | Lighting Pole Installation with Luminares | 2027-08-21 → 2027-07-29 (-23d) | 2027-08-26 → 2027-08-04 (-22d) |  | -21.05d → -2.68d |
| TAEXELCU070005 | Cables Pulling | 2027-08-28 → 2027-08-07 (-21d) | 2027-08-31 → 2027-08-10 (-21d) |  | -24.76d → -6.39d |
| TAEXELCU070007 | Earthing cables | 2027-08-31 → 2027-08-10 (-21d) | 2027-09-02 → 2027-08-12 (-21d) |  | -24.76d → -6.39d |
| 24 | **CCTV Works** | 2027-07-25 → 2027-07-19 (-6d) | 2027-09-05 → 2027-08-31 (-5d) |  |  |
| TAEXCCCU070001 | Pipe Installation with manhole | 2027-07-25 → 2027-07-19 (-6d) | 2027-08-03 → 2027-07-28 (-6d) |  | -25.75d → -20.25d |
| TAEXCCCU070002 | CCTV Swiches Lighting panels Installation | 2027-08-03 → 2027-07-28 (-6d) | 2027-08-15 → 2027-08-09 (-6d) |  | -21.75d → -16.25d |
| TAEXCCCU070003 | Cable laying and connected with Panels | 2027-08-15 → 2027-08-09 (-6d) | 2027-08-25 → 2027-08-19 (-6d) |  | -21.75d → -16.25d |
| TAEXCCCU070004 | Pole Installation with IP Outdoor CCTV POE Camera | 2027-08-25 → 2027-08-19 (-6d) | 2027-09-05 → 2027-08-31 (-5d) |  | -21.75d → -16.25d |
| 8 | **Upgrade Local 08** |  | 2027-09-05 → 2027-08-31 (-5d) |  |  |
| 24 | **Electrical Works** |  | 2027-09-04 → 2027-08-15 (-20d) |  |  |
| TAEXELCU080001 | Trench Cut off |  | 2027-08-15 → 2027-07-24 (-22d) |  | -27.25d → -8.88d |
| TAEXELCU080004 | Trench Backfilling | 2027-08-15 → 2027-07-24 (-22d) | 2027-08-24 → 2027-08-02 (-22d) |  | -19.25d → -0.88d |
| TAEXELCU080006 | Poles RC Foundation | 2027-08-15 → 2027-07-24 (-22d) | 2027-08-18 → 2027-07-27 (-22d) |  | -19.25d → -0.88d |
| TAEXELCU080008 | Lighting Pole Installation with Luminares | 2027-08-18 → 2027-07-27 (-22d) | 2027-08-24 → 2027-08-02 (-22d) |  | -19.25d → -0.88d |
| TAEXELCU080005 | Cables Pulling | 2027-08-24 → 2027-08-02 (-22d) | 2027-08-28 → 2027-08-05 (-23d) |  | -19.25d → -0.88d |
| TAEXELCU080007 | Earthing cables | 2027-09-02 → 2027-08-12 (-21d) | 2027-09-04 → 2027-08-15 (-20d) |  | -24.76d → -6.39d |
| 25 | **CCTV Works** | 2027-07-25 → 2027-07-19 (-6d) | 2027-09-05 → 2027-08-31 (-5d) |  |  |
| TAEXCCCU080001 | Pipe Installation with manhole | 2027-07-25 → 2027-07-19 (-6d) | 2027-08-03 → 2027-07-28 (-6d) |  | -25.75d → -20.25d |
| TAEXCCCU080002 | CCTV Swiches Lighting panels Installation | 2027-08-03 → 2027-07-28 (-6d) | 2027-08-15 → 2027-08-09 (-6d) |  | -21.75d → -16.25d |
| TAEXCCCU080003 | Cable laying and connected with Panels | 2027-08-15 → 2027-08-09 (-6d) | 2027-08-25 → 2027-08-19 (-6d) |  | -21.75d → -16.25d |
| TAEXCCCU080004 | Pole Installation with IP Outdoor CCTV POE Camera | 2027-08-25 → 2027-08-19 (-6d) | 2027-09-05 → 2027-08-31 (-5d) |  | -21.75d → -16.25d |
| 9 | **Upgrade Local 09** |  | 2027-09-14 → 2027-09-08 (-6d) |  |  |
| 26 | **Electrical Works** |  | 2027-09-06 → 2027-08-17 (-20d) |  |  |
| TAEXELCU090001 | Trench Cut off | 2027-08-15 → 2027-07-24 (-22d) | 2027-08-23 → 2027-08-01 (-22d) |  | -27.25d → -8.88d |
| TAEXELCU090004 | Trench Backfilling | 2027-08-23 → 2027-08-01 (-22d) | 2027-09-01 → 2027-08-10 (-22d) |  | -24.25d → -5.88d |
| TAEXELCU090006 | Poles RC Foundation | 2027-08-23 → 2027-08-01 (-22d) | 2027-08-28 → 2027-08-05 (-23d) |  | -27.25d → -8.88d |

| ID | Task | Start | Finish | Complete | Total float |
| --- | --- | --- | --- | --- | --- |
| TAEXELCU090008 | Lighting Pole Installation with Luminares | 2027-08-28 → 2027-08-05 (-23d) | 2027-09-02 → 2027-08-11 (-22d) |  | -27.25d → -8.88d |
| TAEXELCU090005 | Cables Pulling | 2027-09-01 → 2027-08-10 (-22d) | 2027-09-04 → 2027-08-14 (-21d) |  | -24.25d → -5.88d |
| TAEXELCU090007 | Earthing cables | 2027-09-04 → 2027-08-15 (-20d) | 2027-09-06 → 2027-08-17 (-20d) |  | -24.76d → -6.39d |
| 1 | **CCTV Works** | 2027-08-03 → 2027-07-28 (-6d) | 2027-09-14 → 2027-09-08 (-6d) |  |  |
| TAEXCCCU090001 | Pipe Installation with manhole | 2027-08-03 → 2027-07-28 (-6d) | 2027-08-11 → 2027-08-05 (-6d) |  | -25.75d → -20.25d |
| TAEXCCCU090002 | CCTV Swiches Lighting panels Installation | 2027-08-11 → 2027-08-05 (-6d) | 2027-08-23 → 2027-08-17 (-6d) |  | -25.75d → -20.25d |
| TAEXCCCU090003 | Cable laying and connected with Panels | 2027-08-23 → 2027-08-17 (-6d) | 2027-09-03 → 2027-08-29 (-5d) |  | -25.75d → -20.25d |
| TAEXCCCU090004 | Pole Installation with IP Outdoor CCTV POE Camera | 2027-09-03 → 2027-08-29 (-5d) | 2027-09-14 → 2027-09-08 (-6d) |  | -25.75d → -20.25d |
| 10 | **Upgrade Local 12** |  | 2027-09-11 → 2027-08-22 (-20d) |  |  |
| 18 | **Road works** | 2027-03-07 → 2027-03-10 (+3d) | 2027-06-13 → 2027-06-15 (+2d) |  |  |
| TAEXRDCU120002 | Precast Concret Kerps | 2027-03-07 → 2027-03-10 (+3d) | 2027-03-28 → 2027-03-30 (+2d) |  | 43.4d → 41d |
| TAEXRDCU120001 | BWC Asphalt Wearing Course with RC | 2027-05-13 → 2027-05-17 (+4d) | 2027-05-15 → 2027-05-17 (+2d) |  | 43.4d → 41d |
| TAEXRDCU120003 | Precast Interlock Works | 2027-05-15 → 2027-05-18 (+3d) | 2027-06-02 → 2027-06-05 (+3d) |  | 43.4d → 41d |
| TAEXRDCU120004 | Stone Paving works | 2027-06-02 → 2027-06-06 (+4d) | 2027-06-08 → 2027-06-10 (+2d) |  | 43.4d → 41d |
| TAEXRDCU120005 | Road Marking | 2027-06-08 → 2027-06-12 (+4d) | 2027-06-09 → 2027-06-12 (+3d) |  | 43.4d → 41d |
| TAEXRDCU120006 | Traffic Sinage | 2027-06-09 → 2027-06-13 (+4d) | 2027-06-13 → 2027-06-15 (+2d) |  | 43.4d → 41d |
| 19 | **Electrical Works** |  | 2027-09-11 → 2027-08-22 (-20d) |  |  |
| TAEXELCU120001 | Trench Cut off |  | 2027-05-02 → 2027-04-14 (-18d) |  | -27.25d → -8.88d |
| TAEXELCU120002 | Drawpit and PVC Pipes Installation |  | 2027-05-03 → 2027-04-17 (-16d) |  | 60.01d → 74.88d |
| TAEXELCU120003 | Road Crossing Ducts |  | 2027-05-04 → 2027-04-17 (-17d) |  | 65.77d → 80.64d |
| TAEXELCU120005 | Cables Pulling |  | 2027-06-13 → 2027-05-26 (-18d) |  | 49.66d → 64.53d |
| TAEXELCU120004 | Trench Backfilling |  | 2027-06-06 → 2027-05-19 (-18d) |  | 49.66d → 64.53d |
| TAEXELCU120006 | Poles RC Foundation | 2027-05-03 → 2027-04-17 (-16d) | 2027-05-11 → 2027-04-25 (-16d) |  | 60.01d → 74.88d |
| TAEXELCU120008 | Lighting Pole Installation with Luminares | 2027-05-11 → 2027-04-25 (-16d) | 2027-05-23 → 2027-05-06 (-17d) |  | 60.01d → 74.88d |
| TAEXELCU120007 | Earthing cables | 2027-09-06 → 2027-08-17 (-20d) | 2027-09-11 → 2027-08-22 (-20d) |  | -24.76d → -6.39d |
| 1 | **Telecommunication Works** | 2027-04-22 → 2027-04-28 (+6d) | 2027-08-02 → 2027-08-08 (+6d) |  |  |
| TAEXTCCU120001 | Trench Cut off | 2027-04-22 → 2027-04-28 (+6d) | 2027-05-10 → 2027-05-16 (+6d) |  | -15.61d → -20.11d |
| TAEXTCCU120002 | Drawpit and PVC Pipes Installation | 2027-06-28 → 2027-07-04 (+6d) | 2027-07-08 → 2027-07-14 (+6d) |  | -15.61d → -20.11d |
| TAEXTCCU120003 | Road Crossing Ducts | 2027-07-08 → 2027-07-14 (+6d) | 2027-07-13 → 2027-07-19 (+6d) |  | -1.61d → -6.11d |
| TAEXTCCU120004 | Trench Backfilling | 2027-07-13 → 2027-07-19 (+6d) | 2027-08-02 → 2027-08-08 (+6d) |  | -1.61d → -6.11d |
| 15 | **CCTV Works** | 2027-04-29 → 2027-04-24 (-5d) | 2027-06-24 → 2027-06-19 (-5d) |  |  |
| TAEXCCCU120001 | Pipe Installation with manhole | 2027-04-29 → 2027-04-24 (-5d) | 2027-05-12 → 2027-05-06 (-6d) |  | -30.75d → -25.25d |
| TAEXCCCU120002 | CCTV Swiches Lighting panels Installation | 2027-05-12 → 2027-05-06 (-6d) | 2027-05-26 → 2027-05-20 (-6d) |  | 41.25d → 46.75d |
| TAEXCCCU120003 | Cable laying and connected with Panels | 2027-05-26 → 2027-05-20 (-6d) | 2027-06-08 → 2027-06-02 (-6d) |  | 41.25d → 46.75d |
| TAEXCCCU120004 | Pole Installation with IP Outdoor CCTV POE Camera | 2027-06-08 → 2027-06-02 (-6d) | 2027-06-24 → 2027-06-19 (-5d) |  | 41.25d → 46.75d |
| 2 | **Potable Networks** | 2026-11-24 → 2026-11-30 (+6d) | 2027-03-31 → 2027-03-30 (-1d) |  |  |
| TAEXPTCU120001 | Excavation works for Trench | 2026-11-24 → 2026-11-30 (+6d) | 2026-12-08 → 2026-12-13 (+5d) |  | 63.7d → 75.5d |
| TAEXPTCU120002 | Bedding Works | 2026-12-08 → 2026-12-14 (+6d) | 2026-12-10 → 2026-12-15 (+5d) |  | 102.7d → 109.5d |
| TAEXPTCU120003 | Install Pipes & Fittings |  | 2027-01-25 → 2027-01-24 (-1d) |  | 71.7d → 83.5d |
| TAEXPTCU120004 | Backfilling Works for Trench |  | 2027-02-15 → 2027-02-14 (-1d) |  | 71.7d → 83.5d |
| TAEXPTCU120005 | Install Valves with fittings |  | 2027-02-15 → 2027-02-14 (-1d) |  | 71.7d → 83.5d |
| TAEXPTCU120006 | Install fire hydrent |  | 2027-02-25 → 2027-02-24 (-1d) |  | 71.7d → 83.5d |
| TAEXPTCU120007 | Valve Chamber works |  | 2027-03-25 → 2027-03-24 (-1d) |  | 63.7d → 75.5d |
| TAEXPTCU120008 | Inspection Test |  | 2027-03-31 → 2027-03-30 (-1d) |  | 108.4d → 109d |
| 3 | **TSE Networks** |  | 2027-06-02 → 2027-05-15 (-18d) |  |  |
| TAEXTSCU120005 | Install Valves with fittings |  | 2027-05-11 → 2027-04-22 (-19d) |  | 54.7d → 70.7d |
| TAEXTSCU120006 | Valve Chamber works |  | 2027-05-27 → 2027-05-09 (-18d) |  | 54.7d → 70.7d |
| TAEXTSCU120001 | Excavation works for Trench | 2027-01-14 → 2027-01-21 (+7d) | 2027-02-09 → 2027-02-16 (+7d) |  | 54.7d → 70.7d |
| TAEXTSCU120002 | Bedding Works | 2027-02-09 → 2027-02-16 (+7d) | 2027-02-11 → 2027-02-18 (+7d) |  | 104.7d → 98.7d |
| TAEXTSCU120003 | Install Pipes & Fittings | 2027-04-11 → 2027-03-23 (-19d) | 2027-04-20 → 2027-04-01 (-19d) |  | 54.7d → 70.7d |
| TAEXTSCU120004 | Backfilling Works for Trench | 2027-04-20 → 2027-04-01 (-19d) | 2027-05-11 → 2027-04-22 (-19d) |  | 54.7d → 70.7d |
| TAEXTSCU120007 | Inspection Test | 2027-05-27 → 2027-05-09 (-18d) | 2027-06-02 → 2027-05-15 (-18d) |  | 54.7d → 70.7d |
| 12 | **Sewerage Networks** | 2026-11-18 → 2026-11-24 (+6d) | 2027-01-31 → 2027-02-06 (+6d) |  |  |
| TAEXSWCU120001 | Excavation works for Trench | 2026-11-18 → 2026-11-24 (+6d) | 2026-12-07 → 2026-12-13 (+6d) |  | 139.3d → 134.5d |
| TAEXSWCU120002 | Bedding Works | 2026-12-07 → 2026-12-13 (+6d) | 2026-12-12 → 2026-12-17 (+5d) |  | 154.3d → 149.5d |
| TAEXSWCU120003 | Install GRP Pipes & Fittings | 2026-12-12 → 2026-12-17 (+5d) | 2026-12-28 → 2027-01-03 (+6d) |  | 154.3d → 149.5d |
| TAEXSWCU120004 | Backfilling Works for Trench | 2026-12-30 → 2027-01-05 (+6d) | 2027-01-14 → 2027-01-20 (+6d) |  | 154.3d → 149.5d |
| TAEXSWCU120005 | Manhole Installation with backfilling | 2027-01-12 → 2027-01-18 (+6d) | 2027-01-26 → 2027-02-01 (+6d) |  | 154.3d → 149.5d |
| TAEXSWCU120006 | Leakage Test | 2027-01-26 → 2027-02-01 (+6d) | 2027-01-31 → 2027-02-06 (+6d) |  | 154.3d → 149.5d |
| 4 | **Storm Networks** |  | 2027-07-19 → 2027-07-03 (-16d) |  |  |
| TAEXSTCU120001 | Excavation works for Trench |  | 2027-05-20 → 2027-05-03 (-17d) |  | 23.52d → 38.39d |
| TAEXSTCU120002 | Bedding Works | 2027-05-20 → 2027-05-03 (-17d) | 2027-05-25 → 2027-05-08 (-17d) |  | 23.52d → 38.39d |
| TAEXSTCU120003 | Install GRP Pipes & Fittings | 2027-05-25 → 2027-05-08 (-17d) | 2027-06-10 → 2027-05-24 (-17d) |  | 23.52d → 38.39d |
| TAEXSTCU120004 | Backfilling Works for Trench | 2027-06-13 → 2027-05-26 (-18d) | 2027-06-28 → 2027-06-10 (-18d) |  | 23.52d → 38.39d |
| TAEXSTCU120005 | Manhole Installation with backfilling | 2027-06-14 → 2027-05-27 (-18d) | 2027-06-28 → 2027-06-10 (-18d) |  | 23.52d → 38.39d |
| TAEXSTCU120006 | Install Catch Basin with UPVC Pipes & Fittings | 2027-06-30 → 2027-06-14 (-16d) | 2027-07-14 → 2027-06-28 (-16d) |  | 21.02d → 35.89d |
| TAEXSTCU120007 | Leakage Test | 2027-07-14 → 2027-06-28 (-16d) | 2027-07-19 → 2027-07-03 (-16d) |  | 21.02d → 35.89d |
| 11 | **Upgrade Local 14** |  | 2027-09-13 → 2027-08-24 (-20d) |  |  |
| 21 | **Electrical Works** |  | 2027-09-13 → 2027-08-24 (-20d) |  |  |
| TAEXELCU140001 | Trench Cut off |  | 2027-07-25 → 2027-07-03 (-22d) | 29% → 64% | -27.25d → -8.88d |

| ID | Task | Start | Finish | Complete | Total float |
| --- | --- | --- | --- | --- | --- |
| TAEXELCU140005 | Cables Pulling |  | 2027-08-16 → 2027-07-25 (-22d) |  | -1.14d → 17.23d |
| TAEXELCU140004 | Trench Backfilling |  | 2027-08-12 → 2027-07-21 (-22d) |  | -1.14d → 17.23d |
| TAEXELCU140002 | Drawpit and PVC Pipes Installation | 2027-07-25 → 2027-07-03 (-22d) | 2027-08-01 → 2027-07-10 (-22d) |  | -9.2d → 9.17d |
| TAEXELCU140003 | Road Crossing Ducts | 2027-08-01 → 2027-07-10 (-22d) | 2027-08-04 → 2027-07-13 (-22d) |  | -1.14d → 17.23d |
| TAEXELCU140006 | Poles RC Foundation | 2027-08-01 → 2027-07-10 (-22d) | 2027-08-05 → 2027-07-14 (-22d) |  | -9.2d → 9.17d |
| TAEXELCU140008 | Lighting Pole Installation with Luminares | 2027-08-05 → 2027-07-14 (-22d) | 2027-08-12 → 2027-07-21 (-22d) |  | -9.2d → 9.17d |
| TAEXELCU140007 | Earthing cables | 2027-09-11 → 2027-08-22 (-20d) | 2027-09-13 → 2027-08-24 (-20d) |  | -24.76d → -6.39d |
| 22 | **CCTV Works** | 2027-07-15 → 2027-07-10 (-5d) | 2027-08-28 → 2027-08-22 (-6d) |  |  |
| TAEXCCCU140001 | Pipe Installation with manhole | 2027-07-15 → 2027-07-10 (-5d) | 2027-07-24 → 2027-07-18 (-6d) |  | -30.75d → -25.25d |
| TAEXCCCU140002 | CCTV Swiches Lighting panels Installation | 2027-07-24 → 2027-07-18 (-6d) | 2027-08-07 → 2027-08-01 (-6d) |  | -30.75d → -25.25d |
| TAEXCCCU140003 | Cable laying and connected with Panels | 2027-08-07 → 2027-08-01 (-6d) | 2027-08-16 → 2027-08-10 (-6d) |  | -13.75d → -8.25d |
| TAEXCCCU140004 | Pole Installation with IP Outdoor CCTV POE Camera | 2027-08-16 → 2027-08-10 (-6d) | 2027-08-28 → 2027-08-22 (-6d) |  | -13.75d → -8.25d |
| 12 | **Upgrade Local 18** | 2027-08-03 → 2027-07-28 (-6d) | 2027-09-05 → 2027-08-31 (-5d) |  |  |
| 27 | **CCTV Works** | 2027-08-03 → 2027-07-28 (-6d) | 2027-09-05 → 2027-08-31 (-5d) |  |  |
| TAEXCCCU180001 | Pipe Installation with manhole | 2027-08-03 → 2027-07-28 (-6d) | 2027-08-12 → 2027-08-07 (-5d) |  | -21.75d → -16.25d |
| TAEXCCCU180002 | CCTV Swiches Lighting panels Installation | 2027-08-12 → 2027-08-07 (-5d) | 2027-08-23 → 2027-08-17 (-6d) |  | -21.75d → -16.25d |
| TAEXCCCU180003 | Cable laying and connected with Panels | 2027-08-23 → 2027-08-17 (-6d) | 2027-08-31 → 2027-08-25 (-6d) |  | -21.75d → -16.25d |
| TAEXCCCU180004 | Pole Installation with IP Outdoor CCTV POE Camera | 2027-08-31 → 2027-08-25 (-6d) | 2027-09-05 → 2027-08-31 (-5d) |  | -21.75d → -16.25d |
| 13 | **Upgrade Local 20** |  | 2027-09-18 → 2027-09-09 (-9d) |  |  |
| 16 | **Electrical Works** |  | 2027-09-18 → 2027-08-29 (-20d) |  |  |
| TAEXELCU200001 | Trench Cut off |  | 2027-03-29 → 2027-03-13 (-16d) |  | -27.25d → -8.88d |
| TAEXELCU200005 | Cables Pulling |  | 2027-04-27 → 2027-05-02 (+5d) | 59% → 69% | 80.52d → 76.42d |
| TAEXELCU200004 | Trench Backfilling |  | 2027-04-25 → 2027-05-01 (+6d) |  | 80.52d → 76.42d |
| TAEXELCU200002 | Drawpit and PVC Pipes Installation |  | 2027-04-15 → 2027-04-20 (+5d) |  | 76.9d → 72.4d |
| TAEXELCU200003 | Road Crossing Ducts |  | 2027-04-19 → 2027-04-24 (+5d) |  | 80.52d → 76.42d |
| TAEXELCU200006 | Poles RC Foundation | 2027-04-15 → 2027-04-20 (+5d) | 2027-04-24 → 2027-04-28 (+4d) |  | 76.9d → 72.4d |
| TAEXELCU200008 | Lighting Pole Installation with Luminares | 2027-04-24 → 2027-04-28 (+4d) | 2027-05-04 → 2027-05-09 (+5d) |  | 76.9d → 72.4d |
| TAEXELCU200009 | Install Substation & RMU | 2027-04-27 → 2027-05-02 (+5d) | 2027-05-08 → 2027-05-12 (+4d) |  | 80.52d → 76.42d |
| TAEXELCU200007 | Earthing cables | 2027-09-13 → 2027-08-24 (-20d) | 2027-09-18 → 2027-08-29 (-20d) |  | -24.76d → -6.39d |
| 14 | **CCTV Works** | 2027-03-28 → 2027-03-22 (-6d) | 2027-09-15 → 2027-09-09 (-6d) |  |  |
| TAEXCCCU200001 | Pipe Installation with manhole | 2027-03-28 → 2027-03-22 (-6d) | 2027-04-08 → 2027-04-03 (-5d) |  | -30.75d → -25.25d |
| TAEXCCCU200002 | CCTV Swiches Lighting panels Installation | 2027-08-07 → 2027-08-01 (-6d) | 2027-08-22 → 2027-08-16 (-6d) |  | -30.75d → -25.25d |
| TAEXCCCU200003 | Cable laying and connected with Panels | 2027-08-22 → 2027-08-16 (-6d) | 2027-09-02 → 2027-08-28 (-5d) |  | -30.75d → -25.25d |
| TAEXCCCU200004 | Pole Installation with IP Outdoor CCTV POE Camera | 2027-09-02 → 2027-08-28 (-5d) | 2027-09-15 → 2027-09-09 (-6d) |  | -30.75d → -25.25d |
| 1 | **Potable Networks** | 2026-11-09 → 2026-11-16 (+7d) | 2027-01-25 → 2027-01-30 (+5d) |  |  |
| TAEXPTCU200007 | Valve Chamber works | 2026-11-09 → 2026-11-16 (+7d) | 2026-11-28 → 2026-12-05 (+7d) |  | 110.3d → 115.5d |
| TAEXPTCU200008 | Inspection Test | 2026-11-29 → 2026-12-06 (+7d) | 2026-12-03 → 2026-12-10 (+7d) |  | 209d → 203d |
| TAEXPTCU200001 | Excavation works for Trench | 2026-12-08 → 2026-12-14 (+6d) | 2026-12-19 → 2026-12-23 (+4d) |  | 63.7d → 75.5d |
| TAEXPTCU200002 | Bedding Works | 2026-12-19 → 2026-12-24 (+5d) | 2026-12-21 → 2026-12-26 (+5d) |  | 64.7d → 76.5d |
| TAEXPTCU200003 | Install Pipes & Fittings | 2026-12-21 → 2026-12-27 (+6d) | 2026-12-30 → 2027-01-04 (+5d) |  | 64.7d → 76.5d |
| TAEXPTCU200004 | Backfilling Works for Trench | 2026-12-30 → 2027-01-05 (+6d) | 2027-01-18 → 2027-01-23 (+5d) |  | 159.4d → 155d |
| TAEXPTCU200005 | Install Valves with fittings | 2027-01-13 → 2027-01-19 (+6d) | 2027-01-18 → 2027-01-23 (+5d) |  | 159.4d → 155d |
| TAEXPTCU200006 | Install fire hydrent | 2027-01-18 → 2027-01-24 (+6d) | 2027-01-25 → 2027-01-30 (+5d) |  | 159.4d → 155d |
| 2 | **TSE Networks** | 2027-02-09 → 2027-02-16 (+7d) | 2027-04-29 → 2027-05-06 (+7d) |  |  |
| TAEXTSCU200001 | Excavation works for Trench | 2027-02-09 → 2027-02-16 (+7d) | 2027-03-04 → 2027-03-11 (+7d) |  | 54.7d → 70.7d |
| TAEXTSCU200002 | Bedding Works | 2027-03-04 → 2027-03-11 (+7d) | 2027-03-07 → 2027-03-14 (+7d) |  | 71.7d → 70.7d |
| TAEXTSCU200003 | Install Pipes & Fittings | 2027-03-07 → 2027-03-14 (+7d) | 2027-03-16 → 2027-03-23 (+7d) |  | 71.7d → 70.7d |
| TAEXTSCU200004 | Backfilling Works for Trench | 2027-03-16 → 2027-03-23 (+7d) | 2027-04-04 → 2027-04-11 (+7d) |  | 83.2d → 77.2d |
| TAEXTSCU200005 | Install Valves with fittings | 2027-03-30 → 2027-04-06 (+7d) | 2027-04-04 → 2027-04-11 (+7d) |  | 83.2d → 77.2d |
| TAEXTSCU200006 | Valve Chamber works | 2027-04-04 → 2027-04-11 (+7d) | 2027-04-24 → 2027-05-01 (+7d) |  | 83.2d → 77.2d |
| TAEXTSCU200007 | Inspection Test | 2027-04-24 → 2027-05-01 (+7d) | 2027-04-29 → 2027-05-06 (+7d) |  | 83.2d → 77.2d |
| 3 | **Sewerage Networks** | 2026-12-07 → 2026-12-13 (+6d) | 2027-02-14 → 2027-02-20 (+6d) |  |  |
| TAEXSWCU200001 | Excavation works for Trench | 2026-12-07 → 2026-12-13 (+6d) | 2026-12-24 → 2026-12-30 (+6d) |  | 139.3d → 134.5d |
| TAEXSWCU200002 | Bedding Works | 2026-12-24 → 2026-12-30 (+6d) | 2026-12-28 → 2027-01-03 (+6d) |  | 142.3d → 137.5d |
| TAEXSWCU200003 | Install GRP Pipes & Fittings | 2026-12-28 → 2027-01-03 (+6d) | 2027-01-11 → 2027-01-17 (+6d) |  | 142.3d → 137.5d |
| TAEXSWCU200004 | Backfilling Works for Trench | 2027-01-09 → 2027-01-14 (+5d) | 2027-01-28 → 2027-02-03 (+6d) |  | 142.3d → 137.5d |
| TAEXSWCU200005 | Manhole Installation with backfilling | 2027-01-21 → 2027-01-27 (+6d) | 2027-02-09 → 2027-02-15 (+6d) |  | 142.3d → 137.5d |
| TAEXSWCU200006 | Leakage Test | 2027-02-09 → 2027-02-15 (+6d) | 2027-02-14 → 2027-02-20 (+6d) |  | 142.3d → 137.5d |
| 14 | **Upgrade Local 29** |  | 2027-09-20 → 2027-08-31 (-20d) |  |  |
| 25 | **Road Works** |  | 2027-05-04 → 2027-05-06 (+2d) |  |  |
| TAEXRDCU290002 | MBC1 layer | 2027-02-17 → 2027-02-21 (+4d) | 2027-02-18 → 2027-02-21 (+3d) |  | 43.4d → 41d |
| TAEXRDCU290003 | BBC Base Course | 2027-02-18 → 2027-02-22 (+4d) | 2027-02-23 → 2027-02-25 (+2d) |  | 43.4d → 41d |
| TAEXRDCU290005 | Precast Concret Kerps | 2027-02-23 → 2027-02-27 (+4d) | 2027-03-07 → 2027-03-09 (+2d) |  | 43.4d → 41d |
| TAEXRDCU290004 | BWC Asphalt Wearing Course with RC | 2027-03-07 → 2027-03-10 (+3d) | 2027-03-10 → 2027-03-13 (+3d) |  | 77.4d → 75d |
| TAEXRDCU290006 | Precast Interlock Works | 2027-04-20 → 2027-04-24 (+4d) | 2027-04-29 → 2027-05-02 (+3d) |  | 77.4d → 75d |
| TAEXRDCU290007 | Stone Paving works | 2027-04-29 → 2027-05-03 (+4d) | 2027-05-02 → 2027-05-04 (+2d) |  | 77.4d → 75d |
| TAEXRDCU290008 | Road Marking | 2027-05-02 → 2027-05-05 (+3d) | 2027-05-03 → 2027-05-05 (+2d) |  | 77.4d → 75d |
| TAEXRDCU290009 | Traffic Sinage | 2027-05-03 → 2027-05-06 (+3d) | 2027-05-04 → 2027-05-06 (+2d) |  | 77.4d → 75d |
| 20 | **Electrical Works** | 2027-07-05 → 2027-06-17 (-18d) | 2027-09-20 → 2027-08-31 (-20d) |  |  |
| TAEXELCU290001 | Trench Cut off | 2027-07-05 → 2027-06-17 (-18d) | 2027-07-17 → 2027-06-29 (-18d) |  | -27.25d → -8.88d |

| ID | Task | Start | Finish | Total float |
| --- | --- | --- | --- | --- |
| TAEXELCU290002 | Drawpit and PVC Pipes Installation | 2027-07-17 → 2027-06-29 (-18d) | 2027-07-24 → 2027-07-06 (-18d) | -2.1d → 12.77d |
| TAEXELCU290003 | Road Crossing Ducts | 2027-07-24 → 2027-07-06 (-18d) | 2027-07-27 → 2027-07-10 (-17d) | 7.9d → 22.77d |
| TAEXELCU290006 | Poles RC Foundation | 2027-07-24 → 2027-07-06 (-18d) | 2027-07-28 → 2027-07-11 (-17d) | -2.1d → 12.77d |
| TAEXELCU290004 | Trench Backfilling | 2027-07-27 → 2027-07-10 (-17d) | 2027-08-08 → 2027-07-21 (-18d) | 7.9d → 22.77d |
| TAEXELCU290008 | Lighting Pole Installation with Luminares | 2027-07-28 → 2027-07-11 (-17d) | 2027-08-04 → 2027-07-18 (-17d) | -2.1d → 12.77d |
| TAEXELCU290005 | Cables Pulling | 2027-08-08 → 2027-07-21 (-18d) | 2027-08-12 → 2027-07-26 (-17d) | 7.9d → 22.77d |
| TAEXELCU290007 | Earthing cables | 2027-09-18 → 2027-08-29 (-20d) | 2027-09-20 → 2027-08-31 (-20d) | -24.76d → -6.39d |
| 1 | **Telecommunication Works** | 2027-06-23 → 2027-06-29 (+6d) | 2027-07-31 → 2027-08-05 (+5d) |  |
| TAEXTCCU290001 | Trench Cut off | 2027-06-23 → 2027-06-29 (+6d) | 2027-07-05 → 2027-07-11 (+6d) | -12.61d → -17.11d |
| TAEXTCCU290002 | Drawpit and PVC Pipes Installation | 2027-07-08 → 2027-07-14 (+6d) | 2027-07-15 → 2027-07-21 (+6d) | -15.61d → -20.11d |
| TAEXTCCU290003 | Road Crossing Ducts | 2027-07-15 → 2027-07-21 (+6d) | 2027-07-19 → 2027-07-25 (+6d) | 0.39d → -4.11d |
| TAEXTCCU290004 | Trench Backfilling | 2027-07-19 → 2027-07-25 (+6d) | 2027-07-31 → 2027-08-05 (+5d) | 0.39d → -4.11d |
| 21 | **CCTV Works** | 2027-07-07 → 2027-07-01 (-6d) | 2027-08-18 → 2027-08-12 (-6d) |  |
| TAEXCCCU290001 | Pipe Installation with manhole | 2027-07-07 → 2027-07-01 (-6d) | 2027-07-15 → 2027-07-10 (-5d) | -30.75d → -25.25d |
| TAEXCCCU290002 | CCTV Swiches Lighting panels Installation | 2027-07-15 → 2027-07-10 (-5d) | 2027-07-27 → 2027-07-21 (-6d) | -15.75d → -10.25d |
| TAEXCCCU290003 | Cable laying and connected with Panels | 2027-07-27 → 2027-07-21 (-6d) | 2027-08-07 → 2027-08-01 (-6d) | -5.75d → -0.25d |
| TAEXCCCU290004 | Pole Installation with IP Outdoor CCTV POE Camera | 2027-08-07 → 2027-08-01 (-6d) | 2027-08-18 → 2027-08-12 (-6d) | -5.75d → -0.25d |
| 2 | **Potable Networks** |  | 2027-06-03 → 2027-05-20 (-14d) |  |
| TAEXPTCU290007 | Valve Chamber works | 2027-05-17 → 2027-05-03 (-14d) | 2027-06-03 → 2027-05-20 (-14d) | 63.7d → 75.5d |
| 3 | **TSE Networks** |  | 2027-04-20 → 2027-03-29 (-22d) |  |
| TAEXTSCU290006 | Valve Chamber works | 2027-04-03 → 2027-03-11 (-23d) | 2027-04-20 → 2027-03-29 (-22d) | 91.2d → 110.2d |
| 15 | **Upgrade Local 32** |  | 2027-09-25 → 2027-09-04 (-21d) |  |
| 17 | **Electrical Works** | 2027-03-29 → 2027-03-13 (-16d) | 2027-09-25 → 2027-09-04 (-21d) |  |
| TAEXELCU320001 | Trench Cut off | 2027-03-29 → 2027-03-13 (-16d) | 2027-04-11 → 2027-03-25 (-17d) | -27.25d → -8.88d |
| TAEXELCU320002 | Drawpit and PVC Pipes Installation | 2027-04-11 → 2027-04-12 (+1d) | 2027-04-15 → 2027-04-17 (+2d) | 76.02d → 75.15d |
| TAEXELCU320003 | Road Crossing Ducts | 2027-04-15 → 2027-04-17 (+2d) | 2027-04-29 → 2027-05-01 (+2d) | 79.02d → 78.15d |
| TAEXELCU320006 | Poles RC Foundation | 2027-04-15 → 2027-04-17 (+2d) | 2027-04-24 → 2027-04-25 (+1d) | 76.02d → 75.15d |
| TAEXELCU320008 | Lighting Pole Installation with Luminares | 2027-04-24 → 2027-04-25 (+1d) | 2027-05-04 → 2027-05-05 (+1d) | 76.02d → 75.15d |
| TAEXELCU320004 | Trench Backfilling | 2027-04-29 → 2027-05-01 (+2d) | 2027-05-18 → 2027-05-19 (+1d) | 79.02d → 78.15d |
| TAEXELCU320005 | Cables Pulling | 2027-05-18 → 2027-05-19 (+1d) | 2027-05-23 → 2027-05-24 (+1d) | 79.02d → 78.15d |
| TAEXELCU320007 | Earthing cables | 2027-09-20 → 2027-08-31 (-20d) | 2027-09-25 → 2027-09-04 (-21d) | -24.76d → -6.39d |
| 4 | **Telecommunication Works** | 2027-04-08 → 2027-04-03 (-5d) | 2027-08-25 → 2027-08-31 (+6d) |  |
| TAEXCCCU320001 | Pipe Installation with manhole | 2027-04-08 → 2027-04-03 (-5d) | 2027-04-20 → 2027-04-14 (-6d) | -30.75d → -25.25d |
| TAEXCCCU320002 | CCTV Swiches Lighting panels Installation | 2027-07-15 → 2027-07-21 (+6d) | 2027-07-31 → 2027-08-05 (+5d) | -15.61d → -20.11d |
| TAEXCCCU320003 | Cable laying and connected with Panels | 2027-07-31 → 2027-08-05 (+5d) | 2027-08-11 → 2027-08-17 (+6d) | -11.61d → -16.11d |
| TAEXCCCU320004 | Pole Installation with IP Outdoor CCTV POE Camera | 2027-08-11 → 2027-08-17 (+6d) | 2027-08-25 → 2027-08-31 (+6d) | -11.61d → -16.11d |
| 16 | **Potable Networks** | 2026-11-29 → 2026-12-06 (+7d) | 2027-02-04 → 2027-02-09 (+5d) |  |
| TAEXPTCU320007 | Valve Chamber works | 2026-11-29 → 2026-12-06 (+7d) | 2026-12-17 → 2026-12-24 (+7d) | 110.3d → 115.5d |
| TAEXPTCU320001 | Excavation works for Trench | 2026-12-19 → 2026-12-24 (+5d) | 2026-12-29 → 2027-01-03 (+5d) | 63.7d → 75.5d |
| TAEXPTCU320008 | Inspection Test | 2026-12-19 → 2026-12-26 (+7d) | 2026-12-23 → 2026-12-30 (+7d) | 187d → 181d |
| TAEXPTCU320002 | Bedding Works | 2026-12-29 → 2027-01-04 (+6d) | 2026-12-31 → 2027-01-05 (+5d) | 63.7d → 75.5d |
| TAEXPTCU320003 | Install Pipes & Fittings | 2026-12-31 → 2027-01-06 (+6d) | 2027-01-10 → 2027-01-14 (+4d) | 63.7d → 75.5d |
| TAEXPTCU320004 | Backfilling Works for Trench | 2027-01-10 → 2027-01-16 (+6d) | 2027-01-28 → 2027-02-02 (+5d) | 63.7d → 75.5d |
| TAEXPTCU320005 | Install Valves with fittings | 2027-01-24 → 2027-01-30 (+6d) | 2027-01-28 → 2027-02-02 (+5d) | 63.7d → 75.5d |
| TAEXPTCU320006 | Install fire hydrent | 2027-01-28 → 2027-02-03 (+6d) | 2027-02-04 → 2027-02-09 (+5d) | 63.7d → 75.5d |
| 1 | **TSE Networks** |  | 2027-04-29 → 2027-05-06 (+7d) |  |
| TAEXTSCU320005 | Install Valves with fittings |  | 2027-04-04 → 2027-04-11 (+7d) | 83.2d → 77.2d |
| TAEXTSCU320004 | Backfilling Works for Trench | 2027-03-16 → 2027-03-23 (+7d) | 2027-04-04 → 2027-04-11 (+7d) | 83.2d → 77.2d |
| TAEXTSCU320006 | Valve Chamber works | 2027-04-04 → 2027-04-11 (+7d) | 2027-04-24 → 2027-05-01 (+7d) | 83.2d → 77.2d |
| TAEXTSCU320007 | Inspection Test | 2027-04-24 → 2027-05-01 (+7d) | 2027-04-29 → 2027-05-06 (+7d) | 83.2d → 77.2d |
| 3 | **Storm Networks** | 2027-04-11 → 2027-03-25 (-17d) | 2027-06-23 → 2027-06-07 (-16d) |  |
| TAEXSTCU320001 | Excavation works for Trench | 2027-04-11 → 2027-03-25 (-17d) | 2027-04-22 → 2027-04-06 (-16d) | 21.02d → 35.89d |
| TAEXSTCU320002 | Bedding Works | 2027-04-22 → 2027-04-06 (-16d) | 2027-04-26 → 2027-04-10 (-16d) | 21.02d → 35.89d |
| TAEXSTCU320003 | Install GRP Pipes & Fittings | 2027-04-26 → 2027-04-10 (-16d) | 2027-05-03 → 2027-04-17 (-16d) | 21.02d → 35.89d |
| TAEXSTCU320004 | Backfilling Works for Trench | 2027-05-01 → 2027-04-14 (-17d) | 2027-05-20 → 2027-05-04 (-16d) | 21.02d → 35.89d |
| TAEXSTCU320005 | Manhole Installation with backfilling | 2027-05-13 → 2027-04-27 (-16d) | 2027-06-01 → 2027-05-16 (-16d) | 21.02d → 35.89d |
| TAEXSTCU320006 | Install Catch Basin with UPVC Pipes & Fittings | 2027-06-01 → 2027-05-16 (-16d) | 2027-06-19 → 2027-06-02 (-17d) | 21.02d → 35.89d |
| TAEXSTCU320007 | Leakage Test | 2027-06-19 → 2027-06-02 (-17d) | 2027-06-23 → 2027-06-07 (-16d) | 43.02d → 57.89d |
| 16 | **Upgrade Local 33** |  | 2027-09-27 → 2027-09-06 (-21d) |  |
| 27 | **Road Works** | 2027-05-02 → 2027-05-05 (+3d) | 2027-05-29 → 2027-05-31 (+2d) |  |
| TAEXRDCU330002 | Precast Concret Kerps | 2027-05-02 → 2027-05-05 (+3d) | 2027-05-13 → 2027-05-16 (+3d) | 56.4d → 54d |
| TAEXRDCU330001 | BWC Asphalt Wearing Course with RC | 2027-05-13 → 2027-05-17 (+4d) | 2027-05-15 → 2027-05-17 (+2d) | 56.4d → 54d |
| TAEXRDCU330003 | Precast Interlock Works | 2027-05-15 → 2027-05-18 (+3d) | 2027-05-24 → 2027-05-26 (+2d) | 56.4d → 54d |
| TAEXRDCU330004 | Stone Paving works | 2027-05-24 → 2027-05-27 (+3d) | 2027-05-26 → 2027-05-29 (+3d) | 56.4d → 54d |
| TAEXRDCU330005 | Road Marking | 2027-05-26 → 2027-05-30 (+4d) | 2027-05-27 → 2027-05-30 (+3d) | 56.4d → 54d |
| TAEXRDCU330006 | Traffic Sinage | 2027-05-27 → 2027-05-31 (+4d) | 2027-05-29 → 2027-05-31 (+2d) | 56.4d → 54d |
| 18 | **Electrical Works** | 2027-04-11 → 2027-03-25 (-17d) | 2027-09-27 → 2027-09-06 (-21d) |  |
| TAEXELCU330001 | Trench Cut off | 2027-04-11 → 2027-03-25 (-17d) | 2027-04-24 → 2027-04-07 (-17d) | -27.25d → -8.88d |
| TAEXELCU330002 | Drawpit and PVC Pipes Installation | 2027-04-24 → 2027-04-12 (-12d) | 2027-05-04 → 2027-04-22 (-12d) | 68.02d → 78.15d |
| TAEXELCU330003 | Road Crossing Ducts | 2027-05-04 → 2027-04-22 (-12d) | 2027-05-16 → 2027-05-04 (-12d) | 73.02d → 83.15d |

| ID | Task | Start | Finish | Complete | Total float |
| --- | --- | --- | --- | --- | --- |
| TAEXELCU330006 | Poles RC Foundation | 2027-05-04 → 2027-04-22 (-12d) | 2027-05-09 → 2027-04-27 (-12d) |  | 68.02d → 78.15d |
| TAEXELCU330008 | Lighting Pole Installation with Luminares | 2027-05-09 → 2027-04-27 (-12d) | 2027-05-13 → 2027-05-02 (-11d) |  | 68.02d → 78.15d |
| TAEXELCU330004 | Trench Backfilling | 2027-05-16 → 2027-05-04 (-12d) | 2027-05-31 → 2027-05-19 (-12d) |  | 73.02d → 83.15d |
| TAEXELCU330005 | Cables Pulling | 2027-05-31 → 2027-05-19 (-12d) | 2027-06-03 → 2027-05-23 (-11d) |  | 73.02d → 83.15d |
| TAEXELCU330007 | Earthing cables | 2027-09-25 → 2027-09-04 (-21d) | 2027-09-27 → 2027-09-06 (-21d) |  | -24.76d → -6.39d |
| 1 | **Telecommunication Works** | 2027-04-17 → 2027-04-22 (+5d) | 2027-08-18 → 2027-08-24 (+6d) |  |  |
| TAEXTCCU330001 | Trench Cut off | 2027-04-17 → 2027-04-22 (+5d) | 2027-04-22 → 2027-04-28 (+6d) |  | -15.61d → -20.11d |
| TAEXTCCU330002 | Drawpit and PVC Pipes Installation | 2027-07-31 → 2027-08-05 (+5d) | 2027-08-04 → 2027-08-10 (+6d) |  | -15.61d → -20.11d |
| TAEXTCCU330003 | Road Crossing Ducts | 2027-08-04 → 2027-08-10 (+6d) | 2027-08-08 → 2027-08-14 (+6d) |  | -15.61d → -20.11d |
| TAEXTCCU330004 | Trench Backfilling | 2027-08-08 → 2027-08-14 (+6d) | 2027-08-18 → 2027-08-24 (+6d) |  | -15.61d → -20.11d |
| 17 | **CCTV Works** | 2027-04-20 → 2027-04-14 (-6d) | 2027-08-30 → 2027-08-24 (-6d) |  |  |
| TAEXCCCU330001 | Pipe Installation with manhole | 2027-04-20 → 2027-04-14 (-6d) | 2027-04-29 → 2027-04-24 (-5d) |  | -30.75d → -25.25d |
| TAEXCCCU330002 | CCTV Swiches Lighting panels Installation | 2027-07-27 → 2027-07-21 (-6d) | 2027-08-08 → 2027-08-02 (-6d) |  | -15.75d → -10.25d |
| TAEXCCCU330003 | Cable laying and connected with Panels | 2027-08-08 → 2027-08-02 (-6d) | 2027-08-18 → 2027-08-12 (-6d) |  | -15.75d → -10.25d |
| TAEXCCCU330004 | Pole Installation with IP Outdoor CCTV POE Camera | 2027-08-18 → 2027-08-12 (-6d) | 2027-08-30 → 2027-08-24 (-6d) |  | -15.75d → -10.25d |
| 2 | **Potable Networks** | 2026-12-29 → 2026-11-14 (-45d) | 2027-03-10 → 2027-03-06 (-4d) |  |  |
| TAEXPTCU330001 | Excavation works for Trench | 2026-12-29 → 2026-11-14 A (-45d) | 2027-01-03 → 2026-11-14 A (-50d) | 0% → 100% | 72.7d → none |
| TAEXPTCU330002 | Bedding Works | 2027-01-03 → 2026-11-15 A (-49d) | 2027-01-05 → 2026-11-15 A (-51d) | 0% → 100% | 72.7d → none |
| TAEXPTCU330003 | Install Pipes & Fittings | 2027-01-10 → 2026-11-15 A (-56d) | 2027-01-16 → 2026-11-15 A (-62d) | 0% → 100% | 68.7d → none |
| TAEXPTCU330005 | Install Valves with fittings | 2027-01-25 → 2026-11-15 A (-71d) | 2027-01-30 → 2026-11-15 A (-76d) | 0% → 100% | 68.7d → none |
| TAEXPTCU330006 | Install fire hydrent | 2027-02-04 → 2026-11-15 A (-81d) | 2027-02-10 → 2026-11-15 A (-87d) | 0% → 100% | 63.7d → none |
| TAEXPTCU330008 | Inspection Test | 2027-03-07 → 2026-11-15 A (-112d) | 2027-03-10 → 2026-11-15 A (-115d) | 0% → 100% | 126.4d → none |
| TAEXPTCU330004 | Backfilling Works for Trench |  | 2027-01-30 → 2027-01-28 (-2d) |  | 68.7d → 85.5d |
| TAEXPTCU330007 | Valve Chamber works |  | 2027-03-07 → 2027-03-06 (-1d) |  | 63.7d → 75.5d |
| 3 | **TSE Networks** | 2027-03-04 → 2026-11-10 (-114d) | 2027-05-16 → 2027-04-17 (-29d) |  |  |
| TAEXTSCU330001 | Excavation works for Trench | 2027-03-04 → 2026-11-10 A (-114d) | 2027-04-03 → 2026-11-10 A (-144d) | 0% → 100% | 54.7d → none |
| TAEXTSCU330002 | Bedding Works | 2027-04-03 → 2026-11-11 A (-143d) | 2027-04-05 → 2026-11-11 A (-145d) | 0% → 100% | 54.7d → none |
| TAEXTSCU330003 | Install Pipes & Fittings | 2027-04-05 → 2026-11-14 A (-142d) | 2027-04-11 → 2026-11-14 A (-148d) | 0% → 100% | 54.7d → none |
| TAEXTSCU330005 | Install Valves with fittings | 2027-04-20 → 2026-11-14 A (-157d) | 2027-04-25 → 2026-11-14 A (-162d) | 0% → 100% | 69.2d → none |
| TAEXTSCU330004 | Backfilling Works for Trench | 2027-04-11 → 2026-11-15 A (-147d) | 2027-04-25 → 2027-03-30 (-26d) | 0% → 50% | 69.2d → 94.2d |
| TAEXTSCU330007 | Inspection Test | 2027-05-12 → 2026-11-15 A (-178d) | 2027-05-16 → 2026-11-15 A (-182d) | 0% → 100% | 69.2d → none |
| TAEXTSCU330006 | Valve Chamber works | 2027-04-25 → 2027-03-30 (-26d) | 2027-05-12 → 2027-04-17 (-25d) |  | 69.2d → 94.2d |
| 5 | **Storm Networks** |  | 2027-06-30 → 2027-06-14 (-16d) |  |  |
| TAEXSTCU330005 | Manhole Installation with backfilling | 2027-05-13 → 2026-11-14 A (-180d) | 2027-05-26 → 2026-11-15 A (-192d) | 0% → 100% | 41.12d → none |
| TAEXSTCU330004 | Backfilling Works for Trench | 2027-05-01 → 2026-11-15 A (-167d) | 2027-05-15 → 2027-04-21 (-24d) | 0% → 45% | 41.12d → 61.99d |
| TAEXSTCU330006 | Install Catch Basin with UPVC Pipes & Fittings | 2027-06-19 → 2027-06-02 (-17d) | 2027-06-30 → 2027-06-14 (-16d) |  | 21.02d → 35.89d |
| 17 | **Pond** |  | 2027-01-18 → 2027-01-20 (+2d) |  |  |
| 21 | **Storm Water Pond** |  | 2027-01-18 → 2027-01-20 (+2d) |  |  |
| TAEXSTCSWP0007 | Excavation works for ponds 7th part |  | 2026-11-23 → 2026-11-25 (+2d) |  | 196.95d → 195.15d |
| TAEXSTCSWP0009 | Riprap Works part 1 |  | 2026-11-24 → 2026-11-26 (+2d) |  | 196.95d → 194.4d |
| TAEXSTCSWP0012 | Outfall structure works |  | 2027-01-18 → 2027-01-20 (+2d) |  | 196.95d → 194.4d |
| TAEXSTCSWP0010 | Riprap Works Part 2 |  | 2026-11-28 → 2026-11-30 (+2d) |  | 196.95d → 194.4d |
| TAEXSTCSWP0011 | Sand Marl Mix Ballast layer | 2026-11-28 → 2026-11-30 (+2d) | 2026-12-12 → 2026-12-14 (+2d) |  | 196.95d → 194.4d |
| 22 | **CLOSE OUT** | 2027-01-30 → 2027-02-06 (+7d) | 2027-10-10 → 2027-10-04 (-6d) |  |  |
| 3 | **Final Testing and Commmisionning** | 2027-01-30 → 2027-02-06 (+7d) | 2027-10-06 → 2027-09-30 (-6d) |  |  |
| 1 | **Final Test & commisionning Zone 1** | 2027-02-28 → 2027-02-21 (-7d) | 2027-07-11 → 2027-07-05 (-6d) |  |  |
| TACOFTFT0007 | Sewerage Networks | 2027-02-28 → 2027-02-21 (-7d) | 2027-03-07 → 2027-02-28 (-7d) |  | 145.82d → 151.2d |
| TACOFTFT0008 | Storm Water Drainage Networks | 2027-02-28 → 2027-02-21 (-7d) | 2027-03-08 → 2027-03-01 (-7d) |  | 140.82d → 146.2d |
| TACOFTFT0006 | TSE Networks | 2027-03-16 → 2027-03-23 (+7d) | 2027-03-21 → 2027-03-28 (+7d) |  | 133.6d → 127.6d |
| TACOFTFT0005 | Potable Water Networks | 2027-04-11 → 2027-04-08 (-3d) | 2027-04-14 → 2027-04-13 (-1d) |  | 112d → 113.2d |
| TACOFTFT0003 | Telecommunications Networks | 2027-05-27 → 2027-06-01 (+5d) | 2027-06-01 → 2027-06-06 (+5d) |  | 65.65d → 61.15d |
| TACOFTFT0001 | Road Works | 2027-06-01 → 2027-06-07 (+6d) | 2027-06-06 → 2027-06-12 (+6d) |  | 42.92d → 37.29d |
| TACOFTFT0002 | Electrical NetWorks | 2027-06-02 → 2027-06-07 (+5d) | 2027-06-10 → 2027-06-15 (+5d) |  | 57.65d → 53.15d |
| TACOFTFT0004 | CCTV Networks | 2027-07-03 → 2027-06-27 (-6d) | 2027-07-11 → 2027-07-05 (-6d) |  | 37.25d → 42.75d |
| 2 | **Final Test & commisionning Zone 2** | 2027-01-30 → 2027-02-06 (+7d) | 2027-09-26 → 2027-09-20 (-6d) |  |  |
| TACOFTFT0015 | Sewerage Networks | 2027-01-30 → 2027-02-06 (+7d) | 2027-02-06 → 2027-02-13 (+7d) |  | 149.6d → 143.6d |
| TACOFTFT0016 | Storm Water Drainage Networks | 2027-03-22 → 2027-03-15 (-7d) | 2027-03-30 → 2027-03-23 (-7d) |  | 116.82d → 122.2d |
| TACOFTFT0014 | TSE Networks | 2027-03-27 → 2027-03-20 (-7d) | 2027-03-31 → 2027-03-24 (-7d) |  | 131.82d → 137.2d |
| TACOFTFT0013 | Potable Water Networks | 2027-04-05 → 2027-04-04 (-1d) | 2027-04-10 → 2027-04-08 (-2d) |  | 121.7d → 122.3d |
| TACOFTFT0010 | Electrical NetWorks | 2027-06-01 → 2027-06-06 (+5d) | 2027-06-09 → 2027-06-14 (+5d) |  | 45.65d → 41.15d |
| TACOFTFT0011 | Telecommunications Networks | 2027-06-15 → 2027-06-21 (+6d) | 2027-06-23 → 2027-06-29 (+6d) |  | 32.33d → 27.83d |
| TACOFTFT0009 | Road Works | 2027-06-22 → 2027-06-28 (+6d) | 2027-06-30 → 2027-07-06 (+6d) |  | 28.91d → 23.96d |
| TACOFTFT0012 | CCTV Networks | 2027-09-18 → 2027-09-12 (-6d) | 2027-09-26 → 2027-09-20 (-6d) |  | -28.75d → -23.25d |
| 3 | **Final Test & commisionning Zone 3** | 2027-02-18 → 2027-02-23 (+5d) | 2027-10-06 → 2027-09-30 (-6d) |  |  |
| TACOFTFT0023 | Sewerage Networks | 2027-02-18 → 2027-02-23 (+5d) | 2027-02-24 → 2027-03-01 (+5d) |  | 138.05d → 134.5d |
| TACOFTFT0022 | TSE Networks | 2027-06-07 → 2027-05-15 (-23d) | 2027-06-10 → 2027-05-18 (-23d) |  | 73.43d → 93.7d |
| TACOFTFT0021 | Potable Water Networks | 2027-06-03 → 2027-05-20 (-14d) | 2027-06-09 → 2027-05-26 (-14d) |  | 74.7d → 86.5d |
| TACOFTFT0024 | Storm Water Drainage Networks | 2027-07-19 → 2027-07-03 (-16d) | 2027-07-27 → 2027-07-11 (-16d) |  | 21.02d → 35.89d |
| TACOFTFT0017 | Road Works | 2027-07-29 → 2027-08-04 (+6d) | 2027-08-02 → 2027-08-08 (+6d) |  | 3.14d → -1.56d |
| TACOFTFT0018 | Electrical NetWorks | 2027-09-02 → 2027-08-11 (-22d) | 2027-09-09 → 2027-08-19 (-21d) |  | -27.25d → -8.88d |

| ID | Task | Start | Finish | Total float |
| --- | --- | --- | --- | --- |
| TACOFTFT0019 | Telecommunications Networks | 2027-08-18 → 2027-08-24 (+6d) | 2027-08-26 → 2027-09-01 (+6d) | -15.61d → -20.11d |
| TACOFTFT0020 | CCTV Networks | 2027-09-26 → 2027-09-20 (-6d) | 2027-10-06 → 2027-09-30 (-6d) | -28.75d → -23.25d |
| 2 | **AS BUILT DRAWINGS** | 2027-02-22 → 2027-02-23 (+1d) | 2027-09-21 → 2027-09-15 (-6d) |  |
| 1 | **AS BUILT DRAWINGS Zone 1** | 2027-02-28 → 2027-03-01 (+1d) | 2027-09-21 → 2027-09-15 (-6d) |  |
| TACOFTAD0007 | Sewerage Networks | 2027-02-28 → 2027-03-01 (+1d) | 2027-03-11 → 2027-03-13 (+2d) | 135.82d → 134.5d |
| TACOFTAD0005 | Potable Water Networks | 2027-05-23 → 2027-05-09 (-14d) | 2027-06-03 → 2027-05-20 (-14d) | 63.7d → 75.5d |
| TACOFTAD0006 | TSE Networks | 2027-06-02 → 2027-05-15 (-18d) | 2027-06-14 → 2027-05-26 (-19d) | 54.7d → 70.7d |
| TACOFTAD0008 | Storm Water Drainage Networks | 2027-07-07 → 2027-06-21 (-16d) | 2027-07-19 → 2027-07-03 (-16d) | 24.02d → 38.89d |
| TACOFTAD0001 | Road Works | 2027-08-02 → 2027-08-08 (+6d) | 2027-08-05 → 2027-08-11 (+6d) | 3.14d → -1.56d |
| TACOFTAD0002 | Electrical NetWorks | 2027-09-09 → 2027-08-19 (-21d) | 2027-09-16 → 2027-08-26 (-21d) | -27.25d → -8.88d |
| TACOFTAD0003 | Telecommunications Networks | 2027-08-26 → 2027-09-01 (+6d) | 2027-09-03 → 2027-09-08 (+5d) | -15.61d → -20.11d |
| TACOFTAD0004 | CCTV Networks | 2027-09-16 → 2027-09-11 (-5d) | 2027-09-21 → 2027-09-15 (-6d) | -31.75d → -26.25d |
| 2 | **AS BUILT DRAWINGS Zone 2** | 2027-02-22 → 2027-02-23 (+1d) | 2027-09-21 → 2027-09-15 (-6d) |  |
| TACOFTAD0015 | Sewerage Networks | 2027-02-22 → 2027-02-23 (+1d) | 2027-03-11 → 2027-03-13 (+2d) | 135.82d → 134.5d |
| TACOFTAD0013 | Potable Water Networks | 2027-05-23 → 2027-05-09 (-14d) | 2027-06-03 → 2027-05-20 (-14d) | 63.7d → 75.5d |
| TACOFTAD0014 | TSE Networks | 2027-06-02 → 2027-05-15 (-18d) | 2027-06-14 → 2027-05-26 (-19d) | 54.7d → 70.7d |
| TACOFTAD0016 | Storm Water Drainage Networks | 2027-07-01 → 2027-06-15 (-16d) | 2027-07-19 → 2027-07-03 (-16d) | 24.02d → 38.89d |
| TACOFTAD0009 | Road Works | 2027-08-05 → 2027-08-11 (+6d) | 2027-08-09 → 2027-08-15 (+6d) | 3.14d → -1.56d |
| TACOFTAD0010 | Electrical NetWorks | 2027-09-08 → 2027-08-18 (-21d) | 2027-09-16 → 2027-08-26 (-21d) | -27.25d → -8.88d |
| TACOFTAD0011 | Telecommunications Networks | 2027-08-26 → 2027-09-01 (+6d) | 2027-09-03 → 2027-09-08 (+5d) | -15.61d → -20.11d |
| TACOFTAD0012 | CCTV Networks | 2027-09-16 → 2027-09-11 (-5d) | 2027-09-21 → 2027-09-15 (-6d) | -31.75d → -26.25d |
| 3 | **AS BUILT DRAWINGS Zone 3** | 2027-02-28 → 2027-03-01 (+1d) | 2027-09-21 → 2027-09-15 (-6d) |  |
| TACOFTAD0023 | Sewerage Networks | 2027-02-28 → 2027-03-01 (+1d) | 2027-03-11 → 2027-03-13 (+2d) | 135.82d → 134.5d |
| TACOFTAD0021 | Potable Water Networks | 2027-05-23 → 2027-05-09 (-14d) | 2027-06-03 → 2027-05-20 (-14d) | 63.7d → 75.5d |
| TACOFTAD0022 | TSE Networks | 2027-06-02 → 2027-05-15 (-18d) | 2027-06-14 → 2027-05-26 (-19d) | 54.7d → 70.7d |
| TACOFTAD0024 | Storm Water Drainage Networks | 2027-07-07 → 2027-06-21 (-16d) | 2027-07-19 → 2027-07-03 (-16d) | 24.02d → 38.89d |
| TACOFTAD0017 | Road Works | 2027-08-09 → 2027-08-15 (+6d) | 2027-08-12 → 2027-08-18 (+6d) | 3.14d → -1.56d |
| TACOFTAD0018 | Electrical NetWorks | 2027-09-08 → 2027-08-18 (-21d) | 2027-09-16 → 2027-08-26 (-21d) | -27.25d → -8.88d |
| TACOFTAD0019 | Telecommunications Networks | 2027-08-26 → 2027-09-01 (+6d) | 2027-09-03 → 2027-09-08 (+5d) | -15.61d → -20.11d |
| TACOFTAD0020 | CCTV Networks | 2027-09-15 → 2027-09-09 (-6d) | 2027-09-21 → 2027-09-15 (-6d) | -31.75d → -26.25d |
| 1 | **DEMOBILIZATION** | 2027-09-21 → 2027-09-15 (-6d) | 2027-10-10 → 2027-10-04 (-6d) |  |
| TAPCDZ00000001 | Demobilization Manpower | 2027-09-21 → 2027-09-15 (-6d) | 2027-09-28 → 2027-09-22 (-6d) | -31.75d → -26.25d |
| TAPCDZ00000002 | Remove Offices and Structures | 2027-09-28 → 2027-09-22 (-6d) | 2027-10-04 → 2027-09-28 (-6d) | -31.75d → -26.25d |
| TAPCDZ00000022 | Restore Ground Surfaces | 2027-10-03 → 2027-09-27 (-6d) | 2027-10-10 → 2027-10-04 (-6d) | -31.75d → -26.25d |
| TAPCDZ00000012 | Demobilize Equipment from Site | 2027-10-04 → 2027-09-28 (-6d) | 2027-10-10 → 2027-10-04 (-6d) | -31.75d → -26.25d |
| TAPCDZ00000032 | Final Handover | 2027-10-10 → 2027-10-04 (-6d) | 2027-10-10 → 2027-10-04 (-6d) | -31.75d → -26.25d |

## Version 9 (data date 2026-11-23, saved 2026-11-24, file 23-11-2026.xer)

Last finish 2027-10-04 → 2027-10-11 (+7d). Complete tasks 681 → 688.

Changed:

| ID | Task | Start | Finish | Complete | Total float |
| --- | --- | --- | --- | --- | --- |
| GENERAL | **MILESTONS** |  | 2027-10-04 → 2027-10-11 (+7d) |  |  |
| 2 | **CONTRACTUAL MILESTONES** |  | 2027-10-04 → 2027-10-11 (+7d) |  |  |
| TAGNCM0003 | Project finish | 2027-10-04 → 2027-10-11 (+7d) | 2027-10-04 → 2027-10-11 (+7d) |  | -26.25d → -32.25d |
| 1 | **NET WORK MILESTONES** |  | 2027-10-04 → 2027-10-07 (+3d) |  |  |
| TAGNML0008 | Start CCTV Works | 2026-11-16 → 2026-11-23 (+7d) | 2026-11-16 → 2026-11-23 (+7d) |  | -22d → -28d |
| TAGNML0019 | Finish Sewerage Networks | 2027-03-13 → 2027-03-20 (+7d) | 2027-03-13 → 2027-03-20 (+7d) |  | 150.5d → 144.5d |
| TAGNML0018 | Finish TSE Networks | 2027-05-18 → 2027-05-05 (-13d) | 2027-05-18 → 2027-05-05 (-13d) |  | 93.7d → 104.9d |
| TAGNML0017 | Finish Potable Water Networks | 2027-05-26 → 2027-06-01 (+6d) | 2027-05-26 → 2027-06-01 (+6d) |  | 86.5d → 81.9d |
| TAGNML0020 | Finish Storm Water Drainage Networks | 2027-07-03 → 2027-07-01 (-2d) | 2027-07-03 → 2027-07-01 (-2d) |  | 54.89d → 55.73d |
| TAGNML0015 | Finish Teleommunications Works | 2027-09-08 → 2027-08-29 (-10d) | 2027-09-08 → 2027-08-29 (-10d) |  | -4.11d → 5.23d |
| TAGNML0014 | Finish Electrical Works | 2027-09-11 → 2027-09-04 (-7d) | 2027-09-11 → 2027-09-04 (-7d) |  | -6.39d → -0.23d |
| TAGNML0013 | Finish Road Works | 2027-10-04 → 2027-10-06 (+2d) | 2027-10-04 → 2027-10-06 (+2d) |  | -26.25d → -28.7d |
| TAGNML0016 | Finish CCTV Works | 2027-09-30 → 2027-10-07 (+7d) | 2027-09-30 → 2027-10-07 (+7d) |  | -23.25d → -29.25d |
| TAGNZM0006 | Finish Zone 3 | 2027-05-20 → 2027-05-26 (+6d) | 2027-05-20 → 2027-05-26 (+6d) |  | 91.5d → 86.9d |
| 3 | **PRELIMINARY SUBMITTALS** |  | 2026-12-15 → 2026-12-22 (+7d) |  |  |
| TAGNPS0002 | Shop drawing complete |  | 2026-12-15 → 2026-12-22 (+7d) |  | 15.97d → 21.07d |
| 5 | **MOBILIZATION** |  | 2027-08-23 → 2027-08-24 (+1d) |  |  |
| 2 | **Site Facilites and Offices** |  | 2027-08-23 → 2027-08-24 (+1d) |  |  |
| TAGNMZ9 | Office Operation part 01 |  | 2027-08-23 → 2027-08-24 (+1d) | 37% → 39% | 0.02d → -0.01d |
| 17 | **PROCUREMENT** |  | 2027-10-04 → 2027-10-06 (+2d) |  |  |
| 17 | **Material Fabrication and Delivery** |  | 2027-10-04 → 2027-10-06 (+2d) |  |  |
| 1 | **Material Fabrication and Delivery for Road Works** |  | 2027-10-04 → 2027-10-06 (+2d) |  |  |
| TAPQDVRD00011 | ABC Delivery to Site Part 01 |  | 2026-12-14 → 2026-12-17 (+3d) | 65% → 70% | -26.25d → -28.7d |
| TAPQDVRD00041 | Precast Concrete Curbstone Delivery to Site part 01 |  | 2027-07-28 → 2027-07-31 (+3d) |  | -26.25d → -28.7d |
| TAPQDVRD0005 | Precast Concrete Interlocking Delivery to Site | 2027-08-19 → 2027-08-22 (+3d) | 2027-10-04 → 2027-10-06 (+2d) |  | -26.25d → -28.7d |
| TAPQDVEL0002 | cables (LV,MV )Delivery to Site) |  | 2027-01-26 → 2027-02-02 (+7d) |  | -13.37d → -10.77d |
| TAPQDVEL00011 | Pipes ,Fittings Delivery to Site Part 01 |  | 2026-11-17 → 2026-11-24 (+7d) |  | -26.25d → -32.25d |
| TAPQDVEL0003 | Poles & Luminares Delivery to Site |  |  | 41% → 52% | -13.37d → -10.77d |
| TAPQDVEL0005 | Pre cast Drawpits and Pole Foundation Delivery |  |  | 24% → 27% | -13.37d → -10.77d |
| 11 | **Material Fabrication and Delivery for Telecommunication** |  | 2026-11-21 → 2026-11-28 (+7d) |  |  |
| TAPQDVTC0001 | Telecommunication Material (Pipes,,ets) Delivery |  | 2026-11-21 → 2026-11-28 (+7d) |  | -26.25d → -32.25d |
| 12 | **Material Fabrication and Delivery for CCTV Networks** |  | 2026-11-28 → 2026-12-01 (+3d) |  |  |
| TAPQDVCC0001 | CCTV Material Cabls,Camera,Devices,ets) Delivery |  | 2026-11-28 → 2026-12-01 (+3d) | 90% → 95% | -26.25d → -32.25d |
| 15 | **Material Fabrication and Delivery for Sewerage Networks** |  | 2026-12-26 → 2027-01-02 (+7d) |  |  |
| TAPQDVSW00021 | Fiberglass Manholes,ets) Delivery Part 01 | 2026-11-16 → 2026-11-23 (+7d) | 2026-12-26 → 2027-01-02 (+7d) |  | 8.45d → 4.45d |
| 16 | **Material Fabrication and Delivery for Storm Networks** |  | 2026-12-06 → 2026-12-13 (+7d) |  |  |
| TAPQDVST0009 | Catchbasin Delivery to Site |  | 2026-11-22 → 2026-11-29 (+7d) |  | 39d → 35d |
| TAPQDVST00071 | RIprab,Sand,Marl gravel Delivery for Ponds part 01 |  | 2026-11-25 → 2026-12-02 (+7d) |  | 194.4d → 188.4d |
| TAPQDVST00061 | Manholes,ets Delivery part 01 |  | 2026-12-06 → 2026-12-13 (+7d) |  | 25.81d → 21.81d |
| 1 | **CONSTRUCTION WORKS** |  | 2027-09-11 → 2027-09-18 (+7d) |  |  |
| 9 | **ZONE 1** |  | 2027-09-11 → 2027-09-04 (-7d) |  |  |
| TAEXRDCC020005 | MBC1 layer |  | 2027-04-21 → 2027-04-22 (+1d) |  | 23.96d → 23.8d |
| TAEXRDCC020006 | BBC Base Course |  | 2027-04-24 → 2027-04-25 (+1d) | 48% → 49% | 23.96d → 23.8d |
| TAEXRDCC0200021 | Backfilling Works for Road Part 01 |  | 2027-04-14 → 2027-04-15 (+1d) |  | 23.96d → 23.8d |
| TAEXRDCC0200031 | Subgrade Works Part 01 |  |  | 35% → 40% | 23.96d → 23.8d |
| TAEXRDCC020008 | Precast Concret Kerps |  |  | 29% → 32% | 33.29d → 33.46d |
| TAEXELCC020001 | Trench Cut off | 2026-12-26 → 2026-12-29 (+3d) | 2027-01-18 → 2027-01-21 (+3d) |  | 65.56d → 63.55d |
| TAEXELCC020004 | Trench Backfilling | 2027-03-08 → 2027-03-09 (+1d) | 2027-03-29 → 2027-03-30 (+1d) |  | 23.96d → 23.8d |
| TAEXELCC020005 | Cables Pulling | 2027-03-29 → 2027-03-30 (+1d) | 2027-04-07 → 2027-04-08 (+1d) |  | 23.96d → 23.8d |
| TAEXTCCC020001 | Trench Cut off | 2026-11-17 → 2026-11-24 (+7d) | 2026-12-10 → 2026-12-17 (+7d) |  | -20.11d → -9.59d |
| 13 | **CCTV Works** | 2027-03-10 → 2027-03-17 (+7d) | 2027-05-19 → 2027-05-26 (+7d) |  |  |
| TAEXCCCC020001 | Pipe Installation with manhole | 2027-03-10 → 2027-03-17 (+7d) | 2027-03-22 → 2027-03-29 (+7d) |  | -26.25d → -32.25d |
| TAEXCCCC020002 | CCTV Swiches Lighting panels Installation | 2027-03-22 → 2027-03-29 (+7d) | 2027-04-12 → 2027-04-19 (+7d) |  | -26.25d → -32.25d |
| TAEXCCCC020003 | Cable laying and connected with Panels | 2027-04-12 → 2027-04-19 (+7d) | 2027-04-28 → 2027-05-05 (+7d) |  | 72.75d → 66.75d |
| TAEXCCCC020004 | Pole Installation with IP Outdoor CCTV POE Camera | 2027-04-28 → 2027-05-05 (+7d) | 2027-05-19 → 2027-05-26 (+7d) |  | 72.75d → 66.75d |
| TAEXELCC0300011 | Trench Cut off Part 01 | 2026-12-14 → 2026-12-17 (+3d) | 2026-12-26 → 2026-12-29 (+3d) |  | -8.88d → -0.23d |
| 2 | **Telecommunication Works** | 2027-01-03 → 2027-01-10 (+7d) |  |  |  |
| TAEXTCCC030001 | Trench Cut off | 2027-01-03 → 2027-01-10 (+7d) | 2027-01-14 → 2027-01-21 (+7d) |  | -20.11d → -9.59d |
| 3 | **CCTV Works** | 2026-11-21 → 2026-11-28 (+7d) | 2027-05-17 → 2027-05-24 (+7d) |  |  |
| TAEXCCCC030001 | Pipe Installation with manhole | 2026-11-21 → 2026-11-28 (+7d) | 2026-11-29 → 2026-12-06 (+7d) |  | -26.25d → -32.25d |
| TAEXCCCC030002 | CCTV Swiches Lighting panels Installation | 2027-04-12 → 2027-04-19 (+7d) | 2027-04-26 → 2027-05-03 (+7d) |  | -26.25d → -32.25d |
| TAEXCCCC030003 | Cable laying and connected with Panels | 2027-04-26 → 2027-05-03 (+7d) | 2027-05-05 → 2027-05-12 (+7d) |  | 74.75d → 68.75d |
| TAEXCCCC030004 | Pole Installation with IP Outdoor CCTV POE Camera | 2027-05-05 → 2027-05-12 (+7d) | 2027-05-17 → 2027-05-24 (+7d) |  | 74.75d → 68.75d |
| 13 | **Electrical Works** | 2026-12-26 → 2026-12-29 (+3d) |  |  |  |
| TAEXELCU210001 | Trench Cut off | 2026-12-26 → 2026-12-29 (+3d) | 2027-01-10 → 2027-01-13 (+3d) |  | -8.88d → -0.23d |
| 1 | **Telecommunication Works** | 2027-01-14 → 2027-01-21 (+7d) |  |  |  |
| TAEXTCCU210001 | Trench Cut off | 2027-01-14 → 2027-01-21 (+7d) | 2027-01-31 → 2027-02-07 (+7d) |  | -20.11d → -9.59d |
| 10 | **CCTV Works** | 2026-11-29 → 2026-12-06 (+7d) | 2027-06-14 → 2027-06-21 (+7d) |  |  |
| TAEXCCCU210001 | Pipe Installation with manhole | 2026-11-29 → 2026-12-06 (+7d) | 2026-12-15 → 2026-12-22 (+7d) |  | -26.25d → -32.25d |
| TAEXCCCU210002 | CCTV Swiches Lighting panels Installation | 2027-04-26 → 2027-05-03 (+7d) | 2027-05-15 → 2027-05-22 (+7d) |  | -26.25d → -32.25d |

| ID | Task | Start | Finish | Complete | Total float |
| --- | --- | --- | --- | --- | --- |
| TAEXCCCU210003 | Cable laying and connected with Panels | 2027-05-15 → 2027-05-22 (+7d) | 2027-05-29 → 2027-06-05 (+7d) |  | 50.75d → 44.75d |
| TAEXCCCU210004 | Pole Installation with IP Outdoor CCTV POE Camera | 2027-05-29 → 2027-06-05 (+7d) | 2027-06-14 → 2027-06-21 (+7d) |  | 50.75d → 44.75d |
| 2 | **Potable Networks** |  | 2027-04-08 → 2027-02-22 (-45d) |  |  |
| TAEXPTCU210001 | Excavation works for Trench |  | 2026-11-29 → 2026-11-19 A (-10d) | 95% → 100% | 75.5d → none |
| TAEXPTCU210005 | Install Valves with fittings |  | 2027-03-20 → 2027-02-11 (-37d) | 40% → 85% | 101.2d → 140.45d |
| TAEXPTCU210007 | Valve Chamber works |  | 2027-04-03 → 2027-02-16 (-46d) | 40% → 85% | 101.2d → 140.45d |
| TAEXPTCU210002 | Bedding Works |  | 2027-01-24 → 2026-11-21 A (-64d) | 90% → 100% | 130.5d → none |
| TAEXPTCU210003 | Install Pipes & Fittings |  | 2027-02-13 → 2027-01-06 (-38d) | 90% → 98% | 115.7d → 156.15d |
| TAEXPTCU210006 | Install fire hydrent |  | 2027-03-23 → 2027-02-14 (-37d) | 70% → 85% | 101.2d → 140.45d |
| TAEXPTCU210004 | Backfilling Works for Trench | 2027-03-01 → 2027-01-24 (-36d) | 2027-03-20 → 2027-02-11 (-37d) |  | 101.2d → 140.45d |
| TAEXPTCU210008 | Inspection Test | 2027-04-03 → 2027-02-16 (-46d) | 2027-04-08 → 2027-02-22 (-45d) |  | 101.2d → 140.45d |
| 3 | **TSE Networks** |  | 2027-03-23 → 2027-02-15 (-36d) |  |  |
| TAEXTSCU210005 | Install Valves with fittings |  | 2027-03-01 → 2027-01-24 (-36d) |  | 106d → 141.45d |
| TAEXTSCU210006 | Valve Chamber works |  | 2027-03-17 → 2027-02-09 (-36d) |  | 106d → 141.45d |
| TAEXTSCU210001 | Excavation works for Trench | 2026-12-19 → 2026-11-17 A (-32d) | 2027-01-21 → 2026-11-21 A (-61d) | 0% → 100% | 70.7d → none |
| TAEXTSCU210002 | Bedding Works | 2027-01-21 → 2026-11-22 A (-60d) | 2027-01-24 → 2026-12-23 (-32d) | 0% → 85% | 101.2d → 140.45d |
| TAEXTSCU210003 | Install Pipes & Fittings | 2027-01-24 → 2026-11-22 A (-63d) | 2027-02-10 → 2027-01-05 (-36d) | 0% → 25% | 101.2d → 140.45d |
| TAEXTSCU210004 | Backfilling Works for Trench | 2027-02-10 → 2027-01-05 (-36d) | 2027-03-01 → 2027-01-24 (-36d) |  | 101.2d → 140.45d |
| TAEXTSCU210007 | Inspection Test | 2027-03-17 → 2027-02-09 (-36d) | 2027-03-23 → 2027-02-15 (-36d) |  | 110.6d → 141.45d |
| 4 | **Sewerage Networks** |  | 2026-12-29 → 2027-01-04 (+6d) |  |  |
| TAEXSWCU210005 | Manhole Installation with backfilling |  | 2026-12-28 → 2027-01-03 (+6d) | 90% → 95% | 187.9d → 182.65d |
| TAEXSWCU210006 | Leakage Test |  | 2026-12-29 → 2027-01-04 (+6d) |  | 187.9d → 182.65d |
| 5 | **Storm Networks** |  | 2027-02-06 → 2027-02-13 (+7d) |  |  |
| TAEXSTCU210007 | Leakage Test |  | 2027-02-06 → 2027-02-13 (+7d) |  | 143.6d → 137.6d |
| TAEXSTCU2100051 | Manhole Installation with backfilling Part 01 |  | 2026-12-17 → 2026-12-24 (+7d) |  | 36.95d → 32.95d |
| TAEXSTCU2100031 | Install GRP Pipes & Fittings Part 01 |  | 2026-11-18 → 2026-11-25 (+7d) |  | 36.95d → 32.95d |
| TAEXSTCU2100041 | Backfilling Works for Trench Part 01 |  | 2026-12-06 → 2026-12-13 (+7d) |  | 36.95d → 32.95d |
| TAEXSTCU2100021 | Bedding Works Part 01 | 2026-11-16 → 2026-11-23 (+7d) | 2026-11-16 → 2026-11-23 (+7d) |  | 36.95d → 32.95d |
| TAEXSTCU210006 | Install Catch Basin with UPVC Pipes & Fittings | 2027-01-20 → 2027-01-27 (+7d) | 2027-02-04 → 2027-02-11 (+7d) |  | 8.45d → 4.45d |
| 6 | **Upgrade local 26** |  | 2027-09-11 → 2027-09-04 (-7d) |  |  |
| 14 | **Electrical Works** |  | 2027-09-11 → 2027-09-04 (-7d) |  |  |
| TAEXELCU260001 | Trench Cut off |  | 2027-01-13 → 2027-01-16 (+3d) |  | -8.88d → -0.23d |
| TAEXELCU260005 | Cables Pulling |  | 2027-04-24 → 2027-04-20 (-4d) |  | 110.42d → 113.1d |
| TAEXELCU260004 | Trench Backfilling |  | 2027-04-21 → 2027-04-19 (-2d) | 39% → 55% | 110.42d → 113.1d |
| TAEXELCU260006 | Poles RC Foundation |  | 2027-04-19 → 2027-04-18 (-1d) |  | 87.63d → 88.23d |
| TAEXELCU260008 | Lighting Pole Installation with Luminares | 2027-04-19 → 2027-04-18 (-1d) | 2027-04-28 → 2027-04-27 (-1d) |  | 87.63d → 88.23d |
| TAEXELCU260007 | Earthing cables | 2027-09-06 → 2027-08-31 (-6d) | 2027-09-11 → 2027-09-04 (-7d) |  | -6.39d → -0.23d |
| 10 | **CCTV Works** | 2026-12-15 → 2026-12-22 (+7d) | 2027-06-19 → 2027-06-26 (+7d) |  |  |
| TAEXCCCU260001 | Pipe Installation with manhole | 2026-12-15 → 2026-12-22 (+7d) | 2026-12-27 → 2027-01-03 (+7d) |  | -26.25d → -32.25d |
| TAEXCCCU260002 | CCTV Swiches Lighting panels Installation | 2027-05-15 → 2027-05-22 (+7d) | 2027-05-29 → 2027-06-05 (+7d) |  | -26.25d → -32.25d |
| TAEXCCCU260003 | Cable laying and connected with Panels | 2027-05-29 → 2027-06-05 (+7d) | 2027-06-07 → 2027-06-14 (+7d) |  | 46.75d → 40.75d |
| TAEXCCCU260004 | Pole Installation with IP Outdoor CCTV POE Camera | 2027-06-07 → 2027-06-14 (+7d) | 2027-06-19 → 2027-06-26 (+7d) |  | 46.75d → 40.75d |
| 3 | **Local Road 10** |  | 2027-06-27 → 2027-07-04 (+7d) |  |  |
| 12 | **Road Works** |  | 2027-05-25 → 2027-05-30 (+5d) |  |  |
| TAEXRDCL100003 | Subgrade Works |  | 2026-12-14 → 2026-12-17 (+3d) |  | 53.52d → 53.07d |
| TAEXRDCL100004 | ABC aggregate Base Course Works | 2027-02-06 → 2026-11-21 A (-77d) | 2027-02-09 → 2027-02-14 (+5d) | 0% → 50% | 8.45d → 4.45d |
| TAEXRDCL100005 | MBC1 layer | 2027-02-10 → 2027-02-15 (+5d) | 2027-02-10 → 2027-02-15 (+5d) |  | 8.45d → 4.45d |
| TAEXRDCL100006 | BBC Base Course | 2027-02-11 → 2027-02-16 (+5d) | 2027-02-13 → 2027-02-17 (+4d) |  | 8.45d → 4.45d |
| TAEXRDCL100008 | Precast Concret Kerps | 2027-02-14 → 2027-02-18 (+4d) | 2027-03-01 → 2027-03-06 (+5d) |  | 8.45d → 4.45d |
| TAEXRDCL100007 | BWC Asphalt Wearing Course with RC | 2027-05-04 → 2027-05-09 (+5d) | 2027-05-05 → 2027-05-10 (+5d) |  | 48.44d → 44.06d |
| TAEXRDCL100009 | Precast Interlock Works | 2027-05-05 → 2027-05-10 (+5d) | 2027-05-20 → 2027-05-25 (+5d) |  | 48.44d → 44.06d |
| TAEXRDCL100010 | Stone Paving works | 2027-05-20 → 2027-05-25 (+5d) | 2027-05-23 → 2027-05-27 (+4d) |  | 48.44d → 44.06d |
| TAEXRDCL100011 | Road Marking | 2027-05-23 → 2027-05-27 (+4d) | 2027-05-24 → 2027-05-29 (+5d) |  | 48.44d → 44.06d |
| TAEXRDCL100012 | Traffic Sinage | 2027-05-24 → 2027-05-29 (+5d) | 2027-05-25 → 2027-05-30 (+5d) |  | 48.44d → 44.06d |
| TAEXELCL100002 | Drawpit and PVC Pipes Installation | 2027-04-12 → 2026-11-19 A (-144d) | 2027-04-24 → 2027-04-18 (-6d) | 0% → 50% | 44.15d → 50.75d |
| TAEXELCL100003 | Road Crossing Ducts | 2027-04-24 → 2026-11-21 A (-154d) | 2027-04-26 → 2027-04-19 (-7d) | 0% → 50% | 44.15d → 50.75d |
| TAEXELCL100001 | Trench Cut off | 2027-01-13 → 2027-01-16 (+3d) | 2027-01-27 → 2027-01-30 (+3d) |  | -8.88d → -0.23d |
| TAEXELCL100006 | Poles RC Foundation | 2027-04-24 → 2027-04-18 (-6d) | 2027-04-27 → 2027-04-21 (-6d) |  | 55.15d → 60.75d |
| TAEXELCL100004 | Trench Backfilling | 2027-04-26 → 2027-04-19 (-7d) | 2027-05-08 → 2027-05-01 (-7d) |  | 44.15d → 50.75d |
| TAEXELCL100008 | Lighting Pole Installation with Luminares | 2027-04-27 → 2027-04-21 (-6d) | 2027-05-02 → 2027-04-26 (-6d) |  | 84.15d → 89.75d |
| TAEXELCL100005 | Cables Pulling | 2027-05-08 → 2027-05-01 (-7d) | 2027-05-10 → 2027-05-03 (-7d) |  | 44.15d → 50.75d |
| 14 | **Telecommunication Works** | 2027-02-07 → 2026-11-19 (-80d) | 2027-05-23 → 2027-05-19 (-4d) |  |  |
| TAEXTCCL100002 | Drawpit and PVC Pipes Installation | 2027-05-04 → 2026-11-19 A (-166d) | 2027-05-09 → 2027-05-06 (-3d) | 0% → 50% | -13.37d → -10.77d |
| TAEXTCCL100003 | Road Crossing Ducts | 2027-05-09 → 2026-11-21 A (-169d) | 2027-05-11 → 2027-05-08 (-3d) | 0% → 50% | 66.15d → 69.75d |
| TAEXTCCL100001 | Trench Cut off | 2027-02-07 → 2027-02-14 (+7d) | 2027-02-13 → 2027-02-20 (+7d) |  | -20.11d → -9.59d |
| TAEXTCCL100004 | Trench Backfilling | 2027-05-11 → 2027-05-08 (-3d) | 2027-05-23 → 2027-05-19 (-4d) |  | 66.15d → 69.75d |
| 10 | **CCTV Works** | 2026-12-27 → 2027-01-03 (+7d) | 2027-06-27 → 2027-07-04 (+7d) |  |  |
| TAEXCCCL100001 | Pipe Installation with manhole | 2026-12-27 → 2027-01-03 (+7d) | 2027-01-05 → 2027-01-12 (+7d) |  | -26.25d → -32.25d |
| TAEXCCCL100002 | CCTV Swiches Lighting panels Installation | 2027-05-29 → 2027-06-05 (+7d) | 2027-06-09 → 2027-06-16 (+7d) |  | -26.25d → -32.25d |
| TAEXCCCL100003 | Cable laying and connected with Panels | 2027-06-09 → 2027-06-16 (+7d) | 2027-06-16 → 2027-06-23 (+7d) |  | 39.75d → 33.75d |

| ID | Task | Start | Finish | Complete | Total float |
| --- | --- | --- | --- | --- | --- |
| TAEXCCCL100004 | Pole Installation with IP Outdoor CCTV POE Camera | 2027-06-16 → 2027-06-23 (+7d) | 2027-06-27 → 2027-07-04 (+7d) |  | 39.75d → 33.75d |
| 10 | **ZONE 2** |  | 2027-09-11 → 2027-09-18 (+7d) |  |  |
| 1 | **Collector Road 01** |  | 2027-08-01 → 2027-08-08 (+7d) |  |  |
| 13 | **Road Works** |  | 2027-05-11 → 2027-05-16 (+5d) |  |  |
| TAEXRDCC010004 | ABC aggregate Base Course Works | 2027-02-14 → 2026-11-17 A (-89d) | 2027-03-07 → 2027-03-11 (+4d) | 0% → 9% | -1.56d → -5.94d |
| TAEXRDCC0100011 | Road Excavation and Disposal Part 01 | 2027-01-23 → 2027-01-30 (+7d) | 2027-01-26 → 2027-02-02 (+7d) |  | -1.56d → -5.94d |
| TAEXRDCC0100021 | Backfilling Works for Road Part 01 | 2027-01-26 → 2027-02-02 (+7d) | 2027-01-30 → 2027-02-06 (+7d) |  | -1.56d → -5.94d |
| TAEXRDCC0100031 | Subgrade Works Part 01 | 2027-01-30 → 2027-02-06 (+7d) | 2027-02-14 → 2027-02-21 (+7d) |  | -1.56d → -5.94d |
| TAEXRDCC010005 | MBC1 layer | 2027-03-07 → 2027-03-11 (+4d) | 2027-03-09 → 2027-03-14 (+5d) |  | -1.56d → -5.94d |
| TAEXRDCC010006 | BBC Base Course | 2027-03-09 → 2027-03-14 (+5d) | 2027-03-14 → 2027-03-18 (+4d) |  | -1.56d → -5.94d |
| TAEXRDCC010008 | Precast Concret Kerps | 2027-03-14 → 2027-03-18 (+4d) | 2027-04-04 → 2027-04-08 (+4d) |  | -1.56d → -5.94d |
| TAEXRDCC010007 | BWC Asphalt Wearing Course with RC | 2027-04-04 → 2027-04-08 (+4d) | 2027-04-06 → 2027-04-11 (+5d) |  | 64.99d → 60.61d |
| TAEXRDCC010009 | Precast Interlock Works | 2027-04-06 → 2027-04-11 (+5d) | 2027-04-25 → 2027-04-29 (+4d) |  | 64.99d → 60.61d |
| TAEXRDCC010010 | Stone Paving works | 2027-04-25 → 2027-04-29 (+4d) | 2027-05-05 → 2027-05-10 (+5d) |  | 64.99d → 60.61d |
| TAEXRDCC010011 | Road Marking | 2027-05-05 → 2027-05-10 (+5d) | 2027-05-08 → 2027-05-12 (+4d) |  | 64.99d → 60.61d |
| TAEXRDCC010012 | Traffic Sinage | 2027-05-08 → 2027-05-12 (+4d) | 2027-05-11 → 2027-05-16 (+5d) |  | 64.99d → 60.61d |
| TAEXELCC010003 | Road Crossing Ducts |  | 2027-04-26 → 2027-04-25 (-1d) |  | 47.41d → 48.01d |
| TAEXELCC010001 | Trench Cut off | 2027-01-27 → 2027-01-30 (+3d) | 2027-02-11 → 2027-02-14 (+3d) |  | -8.88d → -0.23d |
| TAEXELCC010004 | Trench Backfilling | 2027-04-26 → 2027-04-25 (-1d) | 2027-05-13 → 2027-05-12 (-1d) |  | 47.41d → 48.01d |
| TAEXELCC010005 | Cables Pulling | 2027-05-13 → 2027-05-12 (-1d) | 2027-05-18 → 2027-05-17 (-1d) |  | 47.41d → 48.01d |
| TAEXELCC010008 | Lighting Pole Installation with Luminares | 2027-05-18 → 2027-05-17 (-1d) | 2027-05-30 → 2027-05-29 (-1d) |  | 47.41d → 48.01d |
| 1 | **Telecommunication Works** |  | 2027-06-09 → 2027-06-06 (-3d) |  |  |
| TAEXTCCC010003 | Road Crossing Ducts |  | 2027-05-23 → 2027-05-19 (-4d) |  | 37.55d → 40.15d |
| TAEXTCCC010001 | Trench Cut off | 2027-02-13 → 2027-02-20 (+7d) | 2027-03-11 → 2027-03-18 (+7d) |  | -20.11d → -9.59d |
| TAEXTCCC010002 | Drawpit and HDPE Pipes Installation | 2027-05-09 → 2027-05-06 (-3d) | 2027-05-20 → 2027-05-18 (-2d) |  | -13.37d → -10.77d |
| TAEXTCCC010004 | Trench Backfilling | 2027-05-23 → 2027-05-19 (-4d) | 2027-06-09 → 2027-06-06 (-3d) |  | 37.55d → 40.15d |
| 2 | **CCTV Works** | 2027-01-05 → 2027-01-12 (+7d) | 2027-08-01 → 2027-08-08 (+7d) |  |  |
| TAEXCCCC010001 | Pipe Installation with manhole | 2027-01-05 → 2027-01-12 (+7d) | 2027-01-19 → 2027-01-26 (+7d) |  | -26.25d → -32.25d |
| TAEXCCCC010002 | CCTV Swiches Lighting panels Installation | 2027-06-09 → 2027-06-16 (+7d) | 2027-06-28 → 2027-07-05 (+7d) |  | -26.25d → -32.25d |
| TAEXCCCC010003 | Cable laying and connected with Panels | 2027-06-28 → 2027-07-05 (+7d) | 2027-07-12 → 2027-07-19 (+7d) |  | 9.75d → 3.75d |
| TAEXCCCC010004 | Pole Installation with IP Outdoor CCTV POE Camera | 2027-07-12 → 2027-07-19 (+7d) | 2027-08-01 → 2027-08-08 (+7d) |  | 9.75d → 3.75d |
| 3 | **Potable Networks** |  | 2027-03-15 → 2027-03-17 (+2d) |  |  |
| TAEXPTCC010002 | Bedding Works |  | 2026-11-29 → 2026-12-06 (+7d) |  | -1.56d → -5.94d |
| TAEXPTCC010003 | Install Pipes & Fittings |  | 2026-12-10 → 2026-12-17 (+7d) |  | -1.56d → -5.94d |
| TAEXPTCC010004 | Backfilling Works for Trench |  | 2026-12-24 → 2026-12-31 (+7d) |  | -1.56d → -5.94d |
| TAEXPTCC010007 | Valve Chamber works |  | 2027-03-10 → 2027-03-13 (+3d) |  | 118.2d → 116.67d |
| TAEXPTCC010005 | Install Valves with fittings |  | 2027-02-13 → 2027-02-18 (+5d) |  | 121.27d → 116.67d |
| TAEXPTCC0100011 | Excavation works for Trench Part 01 | 2026-11-16 → 2026-11-23 (+7d) | 2026-11-28 → 2026-12-05 (+7d) |  | -1.56d → -5.94d |
| TAEXPTCC010006 | Install fire hydrent | 2027-02-07 → 2027-02-08 (+1d) | 2027-02-15 → 2027-02-16 (+1d) |  | 109.3d → 108.7d |
| TAEXPTCC010008 | Inspection Test | 2027-03-10 → 2027-03-13 (+3d) | 2027-03-15 → 2027-03-17 (+2d) |  | 118.2d → 116.67d |
| 4 | **TSE Networks** |  | 2027-03-20 → 2027-03-22 (+2d) |  |  |
| TAEXTSCC010005 | Install Valves with fittings |  | 2027-01-12 → 2027-01-19 (+7d) |  | -1.56d → -5.94d |
| TAEXTSCC010006 | Valve Chamber works |  | 2027-01-23 → 2027-01-30 (+7d) |  | -1.56d → -5.94d |
| TAEXTSCC010003 | Install Pipes & Fittings |  | 2026-12-13 → 2026-12-20 (+7d) |  | 8.72d → 4.34d |
| TAEXTSCC010004 | Backfilling Works for Trench | 2026-12-24 → 2026-12-31 (+7d) | 2027-01-12 → 2027-01-19 (+7d) |  | -1.56d → -5.94d |
| TAEXTSCC010007 | Inspection Test | 2027-03-15 → 2027-03-17 (+2d) | 2027-03-20 → 2027-03-22 (+2d) |  | 118.2d → 116.67d |
| 5 | **Sewerage Networks** |  | 2026-12-27 → 2027-01-03 (+7d) |  |  |
| TAEXSWCC010005 | Manhole Installation with backfilling |  | 2026-12-27 → 2027-01-03 (+7d) |  | 178.05d → 172.05d |
| TAEXSWCC010006 | Leakage Test |  | 2026-12-27 → 2027-01-03 (+7d) |  | 178.05d → 172.05d |
| 6 | **Storm Networks** |  | 2026-12-29 → 2027-01-05 (+7d) |  |  |
| TAEXSTCC0100051 | Manhole Installation with backfilling Part 01 |  | 2026-12-08 → 2026-12-15 (+7d) |  | 53.11d → 48.73d |
| TAEXSTCC0100091 | Install Box Culvert Part 2 Part 01 |  | 2026-12-08 → 2026-12-15 (+7d) |  | 53.11d → 48.73d |
| TAEXSTCC010006 | Install Catch Basin with UPVC Pipes & Fittings |  | 2026-12-12 → 2026-12-19 (+7d) |  | 53.11d → 48.73d |
| TAEXSTCC0100041 | Backfilling Works for Trench & Box Culvert Part 01 |  | 2026-11-21 → 2026-11-28 (+7d) |  | 67.85d → 63.47d |
| TAEXSTCC010007 | Leakage Test |  | 2026-12-29 → 2027-01-05 (+7d) |  | 187.7d → 181.7d |
| 11 | **Upgrade Local 28** |  | 2027-08-09 → 2027-08-16 (+7d) |  |  |
| 24 | **Road Works** | 2027-04-04 → 2027-04-08 (+4d) | 2027-06-02 → 2027-06-07 (+5d) |  |  |
| TAEXRDCU280002 | Precast Concret Kerps | 2027-04-04 → 2027-04-08 (+4d) | 2027-04-21 → 2027-04-26 (+5d) |  | -1.56d → -5.94d |
| TAEXRDCU280001 | BWC Asphalt Wearing Course with RC | 2027-05-09 → 2027-05-13 (+4d) | 2027-05-10 → 2027-05-15 (+5d) |  | 45.99d → 41.61d |
| TAEXRDCU280003 | Precast Interlock Works | 2027-05-10 → 2027-05-15 (+5d) | 2027-05-25 → 2027-05-30 (+5d) |  | 45.99d → 41.61d |
| TAEXRDCU280004 | Stone Paving works | 2027-05-25 → 2027-05-30 (+5d) | 2027-05-30 → 2027-06-03 (+4d) |  | 45.99d → 41.61d |
| TAEXRDCU280005 | Road Marking | 2027-05-30 → 2027-06-03 (+4d) | 2027-05-31 → 2027-06-05 (+5d) |  | 45.99d → 41.61d |
| TAEXRDCU280006 | Traffic Sinage | 2027-05-31 → 2027-06-05 (+5d) | 2027-06-02 → 2027-06-07 (+5d) |  | 45.99d → 41.61d |
| TAEXELCU280001 | Trench Cut off |  | 2027-02-17 → 2027-02-21 (+4d) |  | -8.88d → -0.23d |
| TAEXELCU280005 | Cables Pulling |  | 2027-05-23 → 2027-05-22 (-1d) |  | 37.83d → 38.43d |
| 1 | **Telecommunication Works** | 2027-03-11 → 2027-03-18 (+7d) | 2027-06-19 → 2027-06-16 (-3d) |  |  |
| TAEXTCCU280001 | Trench Cut off | 2027-03-11 → 2027-03-18 (+7d) | 2027-03-23 → 2027-03-30 (+7d) |  | -20.11d → -9.59d |
| TAEXTCCU280002 | Drawpit and PVC Pipes Installation | 2027-05-20 → 2027-05-18 (-2d) | 2027-05-30 → 2027-05-27 (-3d) |  | -13.37d → -10.77d |
| TAEXTCCU280003 | Road Crossing Ducts | 2027-05-30 → 2027-05-27 (-3d) | 2027-06-03 → 2027-06-01 (-2d) |  | 29.15d → 31.75d |
| TAEXTCCU280004 | Trench Backfilling | 2027-06-03 → 2027-06-01 (-2d) | 2027-06-19 → 2027-06-16 (-3d) |  | 29.15d → 31.75d |

| ID | Task | Start | Finish | Complete | Total float |
| --- | --- | --- | --- | --- | --- |
| 2 | **CCTV Works** | 2027-01-19 → 2027-01-26 (+7d) | 2027-08-09 → 2027-08-16 (+7d) |  |  |
| TAEXCCCU280001 | Pipe Installation with manhole | 2027-01-19 → 2027-01-26 (+7d) | 2027-02-02 → 2027-02-09 (+7d) |  | -26.25d → -32.25d |
| TAEXCCCU280002 | CCTV Swiches Lighting panels Installation | 2027-06-28 → 2027-07-05 (+7d) | 2027-07-14 → 2027-07-21 (+7d) |  | -26.25d → -32.25d |
| TAEXCCCU280003 | Cable laying and connected with Panels | 2027-07-14 → 2027-07-21 (+7d) | 2027-07-26 → 2027-08-02 (+7d) |  | 2.75d → -3.25d |
| TAEXCCCU280004 | Pole Installation with IP Outdoor CCTV POE Camera | 2027-07-26 → 2027-08-02 (+7d) | 2027-08-09 → 2027-08-16 (+7d) |  | 2.75d → -3.25d |
| 3 | **Potable Networks** |  | 2027-03-10 → 2027-03-11 (+1d) |  |  |
| TAEXPTCU280007 | Valve Chamber works | 2027-02-21 → 2027-02-22 (+1d) | 2027-03-10 → 2027-03-11 (+1d) |  | 122.2d → 121.6d |
| 4 | **TSE Networks** |  | 2027-03-15 → 2027-03-16 (+1d) |  |  |
| TAEXTSCU280005 | Install Valves with fittings |  | 2027-01-16 → 2027-01-20 (+4d) |  | 155.45d → 151.85d |
| TAEXTSCU280006 | Valve Chamber works |  | 2027-01-31 → 2027-02-04 (+4d) |  | 155.45d → 151.85d |
| TAEXTSCU280001 | Excavation works for Trench | 2026-11-23 → 2026-11-28 (+5d) | 2026-12-19 → 2026-12-23 (+4d) |  | 70.7d → 96.1d |
| TAEXTSCU280002 | Bedding Works | 2026-12-19 → 2026-12-23 (+4d) | 2026-12-21 → 2026-12-26 (+5d) |  | 155.45d → 151.85d |
| TAEXTSCU280003 | Install Pipes & Fittings | 2026-12-21 → 2026-12-26 (+5d) | 2026-12-30 → 2027-01-04 (+5d) |  | 155.45d → 151.85d |
| TAEXTSCU280004 | Backfilling Works for Trench | 2026-12-30 → 2027-01-04 (+5d) | 2027-01-16 → 2027-01-20 (+4d) |  | 155.45d → 151.85d |
| TAEXTSCU280007 | Inspection Test | 2027-03-10 → 2027-03-11 (+1d) | 2027-03-15 → 2027-03-16 (+1d) |  | 122.2d → 121.6d |
| 19 | **Storm Networks** |  | 2027-01-09 → 2027-01-16 (+7d) |  |  |
| TAEXSTCU280006 | Install Catch Basin with UPVC Pipes & Fittings | 2026-12-27 → 2027-01-03 (+7d) | 2027-01-09 → 2027-01-16 (+7d) |  | 8.45d → 4.45d |
| 5 | **Local Road 02** |  | 2027-08-28 → 2027-09-03 (+6d) |  |  |
| TAEXRDC L020008 | Precast Concret Kerps |  | 2027-04-26 → 2027-05-01 (+5d) |  | -1.56d → -5.94d |
| TAEXELCL020001 | Trench Cut off |  | 2027-02-24 → 2027-02-27 (+3d) | 40% → 46% | -8.88d → -0.23d |
| TAEXELCL020004 | Trench Backfilling |  | 2027-04-19 → 2027-04-18 (-1d) |  | 70.75d → 71.35d |
| TAEXELCL020006 | Poles RC Foundation | 2027-04-12 → 2026-11-22 A (-141d) | 2027-04-15 → 2027-04-13 (-2d) | 0% → 43% | 73.15d → 75.04d |
| TAEXELCL020008 | Lighting Pole Installation with Luminares | 2027-04-15 → 2027-04-13 (-2d) | 2027-04-20 → 2027-04-18 (-2d) |  | 81.15d → 83.04d |
| 5 | **Telecommunication Works** |  | 2027-06-09 → 2027-06-07 (-2d) |  |  |
| TAEXTCCL020001 | Trench Cut off |  | 2027-03-29 → 2027-04-05 (+7d) |  | -20.11d → -9.59d |
| TAEXTCCL020004 | Trench Backfilling | 2027-05-30 → 2027-05-27 (-3d) | 2027-06-09 → 2027-06-07 (-2d) |  | 37.15d → 39.75d |
| 3 | **CCTV Works** | 2027-02-02 → 2027-02-09 (+7d) | 2027-08-28 → 2027-09-03 (+6d) |  |  |
| TAEXCCCL020001 | Pipe Installation with manhole | 2027-02-02 → 2027-02-09 (+7d) | 2027-02-14 → 2027-02-21 (+7d) |  | -26.25d → -32.25d |
| TAEXCCCL020002 | CCTV Swiches Lighting panels Installation | 2027-07-14 → 2027-07-21 (+7d) | 2027-07-29 → 2027-08-05 (+7d) |  | -26.25d → -32.25d |
| TAEXCCCL020003 | Cable laying and connected with Panels | 2027-07-29 → 2027-08-05 (+7d) | 2027-08-10 → 2027-08-17 (+7d) |  | -13.25d → -19.25d |
| TAEXCCCL020004 | Pole Installation with IP Outdoor CCTV POE Camera | 2027-08-10 → 2027-08-17 (+7d) | 2027-08-28 → 2027-09-03 (+6d) |  | -13.25d → -19.25d |
| 7 | **Local Road 03** |  | 2027-09-09 → 2027-09-16 (+7d) |  |  |
| 2 | **Road Works** |  | 2027-05-13 → 2027-05-19 (+6d) |  |  |
| TAEXRDCL0300021 | Backfilling Works for Road Part 01 |  | 2026-12-08 → 2026-12-15 (+7d) |  | 58.93d → 54.93d |
| TAEXRDCL030008 | Precast Concret Kerps |  | 2027-04-26 → 2027-05-02 (+6d) |  | -1.56d → -5.94d |
| TAEXRDCL030007 | BWC Asphalt Wearing Course with RC | 2027-04-26 → 2027-05-02 (+6d) | 2027-04-27 → 2027-05-03 (+6d) |  | 62.04d → 57.66d |
| TAEXRDCL030009 | Precast Interlock Works | 2027-04-27 → 2027-05-03 (+6d) | 2027-05-06 → 2027-05-12 (+6d) |  | 62.04d → 57.66d |
| TAEXRDCL030010 | Stone Paving works | 2027-05-06 → 2027-05-12 (+6d) | 2027-05-10 → 2027-05-16 (+6d) |  | 62.04d → 57.66d |
| TAEXRDCL030011 | Road Marking | 2027-05-10 → 2027-05-16 (+6d) | 2027-05-11 → 2027-05-17 (+6d) |  | 62.04d → 57.66d |
| TAEXRDCL030012 | Traffic Sinage | 2027-05-11 → 2027-05-17 (+6d) | 2027-05-13 → 2027-05-19 (+6d) |  | 62.04d → 57.66d |
| TAEXELCL030003 | Road Crossing Ducts |  | 2027-04-15 → 2027-04-14 (-1d) |  | 68.5d → 69.1d |
| TAEXELCL030001 | Trench Cut off |  | 2027-02-28 → 2027-03-01 (+1d) | 70% → 76% | -8.88d → -0.23d |
| TAEXELCL030005 | Cables Pulling |  | 2027-04-24 → 2027-04-22 (-2d) |  | 68.5d → 69.1d |
| TAEXELCL030004 | Trench Backfilling |  | 2027-04-21 → 2027-04-20 (-1d) |  | 68.5d → 69.1d |
| TAEXELCL030006 | Poles RC Foundation | 2027-04-14 → 2026-11-22 A (-143d) | 2027-04-18 → 2027-04-15 (-3d) | 0% → 50% | 73.15d → 75.25d |
| TAEXELCL030008 | Lighting Pole Installation with Luminares | 2027-04-18 → 2027-04-15 (-3d) | 2027-04-24 → 2027-04-21 (-3d) |  | 78.15d → 80.25d |
| 3 | **Telecommunication Works** |  | 2027-06-13 → 2027-06-10 (-3d) |  |  |
| TAEXTCCL030002 | Drawpit and PVC Pipes Installation |  | 2027-06-01 → 2027-05-29 (-3d) |  | -13.37d → -10.77d |
| TAEXTCCL030003 | Road Crossing Ducts |  | 2027-06-01 → 2027-05-30 (-2d) |  | 34.17d → 36.77d |
| TAEXTCCL030001 | Trench Cut off | 2027-03-29 → 2026-11-21 A (-128d) | 2027-04-06 → 2027-04-10 (+4d) | 0% → 46% | -20.11d → -9.59d |
| TAEXTCCL030004 | Trench Backfilling | 2027-06-01 → 2027-05-30 (-2d) | 2027-06-13 → 2027-06-10 (-3d) |  | 34.17d → 36.77d |
| 4 | **CCTV Works** | 2027-02-14 → 2027-02-21 (+7d) | 2027-09-09 → 2027-09-16 (+7d) |  |  |
| TAEXCCCL030001 | Pipe Installation with manhole | 2027-02-14 → 2027-02-21 (+7d) | 2027-02-27 → 2027-03-06 (+7d) |  | -26.25d → -32.25d |
| TAEXCCCL030002 | CCTV Swiches Lighting panels Installation | 2027-07-29 → 2027-08-05 (+7d) | 2027-08-14 → 2027-08-21 (+7d) |  | -26.25d → -32.25d |
| TAEXCCCL030003 | Cable laying and connected with Panels | 2027-08-14 → 2027-08-21 (+7d) | 2027-08-25 → 2027-09-01 (+7d) |  | -25.25d → -31.25d |
| TAEXCCCL030004 | Pole Installation with IP Outdoor CCTV POE Camera | 2027-08-25 → 2027-09-01 (+7d) | 2027-09-09 → 2027-09-16 (+7d) |  | -25.25d → -31.25d |
| 9 | **Local Road 04** |  | 2027-09-06 → 2027-09-13 (+7d) |  |  |
| 2 | **Road Works** |  | 2027-06-14 → 2027-06-20 (+6d) |  |  |
| TAEXRDCL040007 | BWC Asphalt Wearing Course with RC | 2027-04-26 → 2027-05-02 (+6d) | 2027-05-19 → 2027-05-25 (+6d) |  | 35.04d → 30.66d |
| TAEXRDCL040009 | Precast Interlock Works | 2027-05-19 → 2027-05-25 (+6d) | 2027-06-02 → 2027-06-08 (+6d) |  | 35.04d → 30.66d |
| TAEXRDCL040010 | Stone Paving works | 2027-06-02 → 2027-06-08 (+6d) | 2027-06-10 → 2027-06-16 (+6d) |  | 35.04d → 30.66d |
| TAEXRDCL040011 | Road Marking | 2027-06-10 → 2027-06-16 (+6d) | 2027-06-12 → 2027-06-17 (+5d) |  | 35.04d → 30.66d |
| TAEXRDCL040012 | Traffic Sinage | 2027-06-12 → 2027-06-17 (+5d) | 2027-06-14 → 2027-06-20 (+6d) |  | 35.04d → 30.66d |
| TAEXELCL040001 | Trench Cut off |  |  | 77% → 88% | -8.88d → -0.23d |
| TAEXELCL040006 | Poles RC Foundation |  | 2027-04-14 → 2026-11-22 A (-143d) | 50% → 100% | 78.65d → none |
| TAEXELCL040008 | Lighting Pole Installation with Luminares | 2027-04-14 → 2026-11-22 A (-143d) | 2027-04-20 → 2027-04-12 (-8d) | 0% → 85% | 81.65d → 88d |
| 3 | **Telecommunication Works** |  | 2027-06-13 → 2027-06-09 (-4d) |  |  |
| TAEXTCCL040001 | Trench Cut off |  | 2027-04-14 → 2027-04-11 (-3d) | 2% → 83% | -20.11d → -9.59d |
| TAEXTCCL040004 | Trench Backfilling | 2027-06-01 → 2027-05-29 (-3d) | 2027-06-13 → 2027-06-09 (-4d) |  | 34.83d → 37.43d |
| 4 | **CCTV Works** | 2027-02-27 → 2027-03-06 (+7d) | 2027-09-06 → 2027-09-13 (+7d) |  |  |

| ID | Task | Start | Finish | Complete | Total float |
| --- | --- | --- | --- | --- | --- |
| TAEXCCCL040001 | Pipe Installation with manhole | 2027-02-27 → 2027-03-06 (+7d) | 2027-03-10 → 2027-03-17 (+7d) |  | -26.25d → -32.25d |
| TAEXCCCL040002 | CCTV Swiches Lighting panels Installation | 2027-07-29 → 2027-08-05 (+7d) | 2027-08-10 → 2027-08-17 (+7d) |  | -26.25d → -32.25d |
| TAEXCCCL040003 | Cable laying and connected with Panels | 2027-08-10 → 2027-08-17 (+7d) | 2027-08-22 → 2027-08-29 (+7d) |  | -22.25d → -28.25d |
| TAEXCCCL040004 | Pole Installation with IP Outdoor CCTV POE Camera | 2027-08-22 → 2027-08-29 (+7d) | 2027-09-06 → 2027-09-13 (+7d) |  | -22.25d → -28.25d |
| 2 | **Local Road 05** |  | 2027-09-11 → 2027-09-18 (+7d) |  |  |
| TAEXELCL050006 | Poles RC Foundation | 2027-04-12 → 2026-11-22 A (-141d) | 2027-04-15 → 2027-04-12 (-3d) | 0% → 78% | 50.15d → 55.09d |
| TAEXELCL050008 | Lighting Pole Installation with Luminares | 2027-04-15 → 2026-11-22 A (-144d) | 2027-04-21 → 2027-04-15 (-6d) | 0% → 40% | 50.15d → 55.09d |
| 2 | **Telecommunication Works** |  | 2027-06-13 → 2027-06-09 (-4d) |  |  |
| TAEXTCCL050001 | Trench Cut off |  | 2027-04-22 → 2027-04-13 (-9d) | 4% → 72% | -20.11d → -9.59d |
| TAEXTCCL050004 | Trench Backfilling | 2027-06-01 → 2027-05-29 (-3d) | 2027-06-13 → 2027-06-09 (-4d) |  | 27.83d → 30.43d |
| 4 | **CCTV Works** | 2027-02-27 → 2027-03-06 (+7d) | 2027-09-11 → 2027-09-18 (+7d) |  |  |
| TAEXCCCL050001 | Pipe Installation with manhole | 2027-02-27 → 2027-03-06 (+7d) | 2027-03-10 → 2027-03-17 (+7d) |  | -26.25d → -32.25d |
| TAEXCCCL050002 | CCTV Swiches Lighting panels Installation | 2027-08-10 → 2027-08-17 (+7d) | 2027-08-22 → 2027-08-29 (+7d) |  | -26.25d → -32.25d |
| TAEXCCCL050003 | Cable laying and connected with Panels | 2027-08-22 → 2027-08-29 (+7d) | 2027-09-02 → 2027-09-08 (+6d) |  | -26.25d → -32.25d |
| TAEXCCCL050004 | Pole Installation with IP Outdoor CCTV POE Camera | 2027-09-02 → 2027-09-08 (+6d) | 2027-09-11 → 2027-09-18 (+7d) |  | -26.25d → -32.25d |
| 11 | **ZONE 3** |  | 2027-09-09 → 2027-09-16 (+7d) |  |  |
| 1 | **Local Road 01** |  | 2027-07-15 → 2027-07-11 (-4d) |  |  |
| 12 | **Road Works** |  | 2027-06-20 → 2027-06-24 (+4d) |  |  |
| TAEXRDCL010004 | ABC aggregate Base Course Works |  | 2027-02-10 → 2027-02-17 (+7d) |  | 62.24d → 56.24d |
| TAEXRDCL010005 | MBC1 layer |  | 2027-02-10 → 2027-02-17 (+7d) |  | 62.24d → 56.24d |
| TAEXRDCL010006 | BBC Base Course |  | 2027-02-11 → 2027-02-18 (+7d) |  | 62.24d → 56.24d |
| TAEXRDCL010008 | Precast Concret Kerps |  | 2027-05-03 → 2027-05-08 (+5d) |  | -1.56d → -5.94d |
| TAEXRDCL010007 | BWC Asphalt Wearing Course with RC | 2027-05-03 → 2027-05-08 (+5d) | 2027-05-04 → 2027-05-09 (+5d) |  | 37.44d → 33.06d |
| TAEXRDCL010009 | Precast Interlock Works | 2027-05-25 → 2027-05-30 (+5d) | 2027-06-12 → 2027-06-16 (+4d) |  | 37.44d → 33.06d |
| TAEXRDCL010010 | Stone Paving works | 2027-06-12 → 2027-06-16 (+4d) | 2027-06-16 → 2027-06-21 (+5d) |  | 37.44d → 33.06d |
| TAEXRDCL010011 | Road Marking | 2027-06-16 → 2027-06-21 (+5d) | 2027-06-17 → 2027-06-22 (+5d) |  | 37.44d → 33.06d |
| TAEXRDCL010012 | Traffic Sinage | 2027-06-17 → 2027-06-22 (+5d) | 2027-06-20 → 2027-06-24 (+4d) |  | 37.44d → 33.06d |
| 1 | **Electrical Works** |  | 2027-07-15 → 2027-07-10 (-5d) |  |  |
| TAEXELCL010002 | Road Crossing Ducts |  | 2027-05-06 → 2027-04-29 (-7d) |  | 5.93d → 11.93d |
| TAEXELCL010003 | Drawpit and PVC Pipes Installation |  | 2027-05-03 → 2027-04-26 (-7d) |  | 5.93d → 11.93d |
| TAEXELCL010001 | Trench Cut off | 2027-04-14 → 2026-11-21 A (-144d) | 2027-04-28 → 2027-04-21 (-7d) | 0% → 43% | -8.88d → -0.23d |
| TAEXELCL010006 | Poles RC Foundation | 2027-05-03 → 2027-04-26 (-7d) | 2027-05-06 → 2027-04-29 (-7d) |  | 63.21d → 69.21d |
| TAEXELCL010004 | Trench Backfilling | 2027-05-06 → 2027-04-29 (-7d) | 2027-05-18 → 2027-05-11 (-7d) |  | 5.93d → 11.93d |
| TAEXELCL010008 | Lighting Pole Installation with Luminares | 2027-05-06 → 2027-04-29 (-7d) | 2027-05-12 → 2027-05-05 (-7d) |  | 69.21d → 75.21d |
| TAEXELCL010005 | Cables Pulling | 2027-07-10 → 2027-07-03 (-7d) | 2027-07-13 → 2027-07-06 (-7d) |  | 5.93d → 11.93d |
| TAEXELCL010007 | Earthing cables | 2027-07-13 → 2027-07-07 (-6d) | 2027-07-15 → 2027-07-10 (-5d) |  | 5.93d → 10.75d |
| 2 | **Telecommunication Works** |  | 2027-06-17 → 2027-06-15 (-2d) |  |  |
| TAEXTCCL010002 | Drawpit and PVC Pipes Installation |  | 2027-06-05 → 2027-06-01 (-4d) |  | -13.37d → -10.77d |
| TAEXTCCL010003 | Road Crossing Ducts |  | 2027-06-06 → 2027-06-03 (-3d) |  | 37.03d → 39.63d |
| TAEXTCCL010001 | Trench Cut off | 2027-05-16 → 2026-11-21 A (-176d) | 2027-05-24 → 2027-05-11 (-13d) | 0% → 41% | -20.11d → -9.59d |
| TAEXTCCL010004 | Trench Backfilling | 2027-06-06 → 2027-06-03 (-3d) | 2027-06-17 → 2027-06-15 (-2d) |  | 37.03d → 39.63d |
| 16 | **CCTV Works** | 2027-05-06 → 2027-05-13 (+7d) | 2027-07-04 → 2027-07-11 (+7d) |  |  |
| TAEXCCCL010001 | Pipe Installation with manhole | 2027-05-06 → 2027-05-13 (+7d) | 2027-05-20 → 2027-05-27 (+7d) |  | -25.25d → -31.25d |
| TAEXCCCL010002 | CCTV Swiches Lighting panels Installation | 2027-05-20 → 2027-05-27 (+7d) | 2027-06-05 → 2027-06-12 (+7d) |  | 33.75d → 27.75d |
| TAEXCCCL010003 | Cable laying and connected with Panels | 2027-06-05 → 2027-06-12 (+7d) | 2027-06-16 → 2027-06-23 (+7d) |  | 33.75d → 27.75d |
| TAEXCCCL010004 | Pole Installation with IP Outdoor CCTV POE Camera | 2027-06-16 → 2027-06-23 (+7d) | 2027-07-04 → 2027-07-11 (+7d) |  | 33.75d → 27.75d |
| 17 | **Potable Networks** |  | 2027-03-30 → 2027-04-05 (+6d) |  |  |
| TAEXPTCL010002 | Bedding Works |  | 2026-11-21 → 2026-11-28 (+7d) |  | 67.38d → 63d |
| TAEXPTCL010003 | Install Pipes & Fittings |  | 2027-01-25 → 2027-01-30 (+5d) |  | 109.3d → 108.7d |
| TAEXPTCL010004 | Backfilling Works for Trench |  | 2027-01-27 → 2027-02-02 (+6d) |  | 123.7d → 119.1d |
| TAEXPTCL0100011 | Excavation works for Trench Part 01 |  | 2026-11-16 → 2026-11-23 (+7d) |  | -1.56d → -5.94d |
| TAEXPTCL010007 | Valve Chamber works |  | 2027-03-27 → 2027-04-01 (+5d) |  | 75.5d → 70.9d |
| TAEXPTCL010005 | Install Valves with fittings |  | 2027-01-30 → 2027-02-04 (+5d) |  | 123.7d → 119.1d |
| TAEXPTCL010006 | Install fire hydrent |  | 2027-01-25 → 2027-01-31 (+6d) |  | 109.3d → 108.7d |
| TAEXPTCL010008 | Inspection Test |  | 2027-03-30 → 2027-04-05 (+6d) |  | 109.3d → 104.7d |
| 3 | **TSE Networks** |  | 2027-04-13 → 2027-03-15 (-29d) |  |  |
| TAEXTSCL010002 | Bedding Works |  | 2026-11-21 → 2026-11-28 (+7d) |  | 67.38d → 63d |
| TAEXTSCL010003 | Install Pipes & Fittings |  | 2027-04-05 → 2027-03-06 (-30d) |  | 83.97d → 109.77d |
| TAEXTSCL010004 | Backfilling Works for Trench |  | 2027-04-10 → 2027-03-11 (-30d) |  | 83.97d → 109.77d |
| TAEXTSCL0100011 | Excavation works for Trench Part 01 |  | 2026-11-19 → 2026-11-26 (+7d) |  | 27d → 22.62d |
| TAEXTSCL010006 | Valve Chamber works |  | 2027-04-12 → 2027-03-14 (-29d) |  | 107.23d → 132.63d |
| TAEXTSCL010005 | Install Valves with fittings |  | 2027-04-10 → 2027-03-11 (-30d) |  | 83.97d → 109.77d |
| TAEXTSCL010007 | Inspection Test |  | 2027-04-13 → 2027-03-15 (-29d) |  | 107.23d → 132.63d |
| 13 | **Sewerage Networks** |  | 2027-01-06 → 2027-01-13 (+7d) |  |  |
| TAEXSWCL0100011 | Excavation works for Trench Part 01 |  | 2026-11-24 → 2026-12-01 (+7d) |  | 134.5d → 128.5d |
| TAEXSWCL0100021 | Bedding Works Part 01 |  | 2026-11-25 → 2026-12-02 (+7d) |  | 177d → 171d |
| TAEXSWCL0100031 | Install GRP Pipes & Fittings Part 01 |  | 2026-12-05 → 2026-12-12 (+7d) |  | 177d → 171d |
| TAEXSWCL0100051 | Manhole Installation with backfilling Part 01 |  | 2027-01-05 → 2027-01-12 (+7d) |  | 175d → 169d |
| TAEXSWCL0100041 | Backfilling Works for Trench Part 01 |  | 2026-12-22 → 2026-12-29 (+7d) |  | 177d → 171d |
| TAEXSWCL010006 | Leakage Test |  | 2027-01-06 → 2027-01-13 (+7d) |  | 175d → 169d |

| ID | Task | Start | Finish | Complete | Total float |
| --- | --- | --- | --- | --- | --- |
| 4 | **Storm Networks** |  | 2026-12-20 → 2026-12-27 (+7d) |  |  |
| TAEXSTCL0100051 | Manhole Installation with backfilling Part 01 |  | 2026-12-07 → 2026-12-14 (+7d) |  | 62.24d → 56.24d |
| TAEXSTCL0100011 | Excavation works for Trench & Box Culvert Part 01 |  | 2026-11-17 → 2026-11-24 (+7d) |  | 25.62d → 27.62d |
| TAEXSTCL010006 | Install Catch Basin with UPVC Pipes & Fittings |  | 2026-12-13 → 2026-12-20 (+7d) |  | 62.24d → 56.24d |
| TAEXSTCL0100041 | Backfilling Works for Trench and Boxculvert Part 01 |  | 2026-11-22 → 2026-11-29 (+7d) |  | 73.88d → 67.88d |
| TAEXSTCL0100021 | Bedding Works Part 01 |  | 2026-11-21 → 2026-11-28 (+7d) |  | 67.38d → 63d |
| TAEXSTCL0100031 | Install GRP Pipes & Fittings Part 01 |  | 2026-11-22 → 2026-11-29 (+7d) |  | 67.38d → 63d |
| TAEXSTCL010007 | Leakage Test |  | 2026-12-20 → 2026-12-27 (+7d) |  | 62.24d → 56.24d |
| 5 | **Local Road 06** |  | 2027-08-01 → 2027-07-25 (-7d) |  |  |
| 12 | **Road Works** |  | 2027-06-29 → 2027-07-04 (+5d) |  |  |
| TAEXRDCL0600031 | Subgrade Works Part 01 | 2027-02-21 → 2027-02-25 (+4d) | 2027-02-24 → 2027-03-02 (+6d) |  | 41d → 36.95d |
| TAEXRDCL060004 | ABC aggregate Base Course Works | 2027-02-25 → 2027-03-02 (+5d) | 2027-03-06 → 2027-03-11 (+5d) |  | 41d → 36.95d |
| TAEXRDCL060005 | MBC1 layer | 2027-03-07 → 2027-03-11 (+4d) | 2027-03-07 → 2027-03-13 (+6d) |  | 41d → 36.95d |
| TAEXRDCL060006 | BBC Base Course | 2027-03-08 → 2027-03-13 (+5d) | 2027-03-14 → 2027-03-20 (+6d) |  | 41d → 36.95d |
| TAEXRDCL060008 | Precast Concret Kerps | 2027-05-03 → 2027-05-08 (+5d) | 2027-05-24 → 2027-05-29 (+5d) |  | -1.56d → -5.94d |
| TAEXRDCL060007 | BWC Asphalt Wearing Course with RC | 2027-05-24 → 2027-05-29 (+5d) | 2027-05-26 → 2027-05-31 (+5d) |  | 29.44d → 25.06d |
| TAEXRDCL060009 | Precast Interlock Works | 2027-05-26 → 2027-05-31 (+5d) | 2027-06-12 → 2027-06-16 (+4d) |  | 29.44d → 25.06d |
| TAEXRDCL060010 | Stone Paving works | 2027-06-12 → 2027-06-16 (+4d) | 2027-06-26 → 2027-06-30 (+4d) |  | 29.44d → 25.06d |
| TAEXRDCL060011 | Road Marking | 2027-06-26 → 2027-06-30 (+4d) | 2027-06-27 → 2027-07-01 (+4d) |  | 29.44d → 25.06d |
| TAEXRDCL060012 | Traffic Sinage | 2027-06-27 → 2027-07-01 (+4d) | 2027-06-29 → 2027-07-04 (+5d) |  | 29.44d → 25.06d |
| 1 | **Electrical Works** | 2027-04-28 → 2027-04-21 (-7d) | 2027-08-01 → 2027-07-25 (-7d) |  |  |
| TAEXELCL060001 | Trench Cut off | 2027-04-28 → 2027-04-21 (-7d) | 2027-05-10 → 2027-05-03 (-7d) |  | -8.88d → -0.23d |
| TAEXELCL060002 | Drawpit and PVC Pipes Installation | 2027-05-10 → 2027-05-03 (-7d) | 2027-05-16 → 2027-05-09 (-7d) |  | -6.23d → -0.23d |
| TAEXELCL060003 | Road Crossing Ducts | 2027-05-16 → 2027-05-09 (-7d) | 2027-05-18 → 2027-05-11 (-7d) |  | -6.23d → -0.23d |
| TAEXELCL060006 | Poles RC Foundation | 2027-05-16 → 2027-05-09 (-7d) | 2027-05-20 → 2027-05-13 (-7d) |  | 53.77d → 59.77d |
| TAEXELCL060004 | Trench Backfilling | 2027-05-18 → 2027-05-11 (-7d) | 2027-06-03 → 2027-05-27 (-7d) |  | -6.23d → -0.23d |
| TAEXELCL060008 | Lighting Pole Installation with Luminares | 2027-05-20 → 2027-05-13 (-7d) | 2027-05-27 → 2027-05-20 (-7d) |  | 56.77d → 62.77d |
| TAEXELCL060005 | Cables Pulling | 2027-07-26 → 2027-07-19 (-7d) | 2027-07-29 → 2027-07-22 (-7d) |  | -6.23d → -0.23d |
| TAEXELCL060007 | Earthing cables | 2027-07-29 → 2027-07-22 (-7d) | 2027-08-01 → 2027-07-25 (-7d) |  | -6.23d → -0.23d |
| 2 | **Telecommunication Works** | 2027-05-24 → 2027-05-11 (-13d) | 2027-06-29 → 2027-06-26 (-3d) |  |  |
| TAEXTCCL060001 | Trench Cut off | 2027-05-24 → 2027-05-11 (-13d) | 2027-06-05 → 2027-05-23 (-13d) |  | -20.11d → -9.59d |
| TAEXTCCL060002 | Drawpit and PVC Pipes Installation | 2027-06-05 → 2027-06-01 (-4d) | 2027-06-10 → 2027-06-07 (-3d) |  | -13.37d → -10.77d |
| TAEXTCCL060003 | Road Crossing Ducts | 2027-06-10 → 2027-06-07 (-3d) | 2027-06-13 → 2027-06-09 (-4d) |  | 27.63d → 30.23d |
| TAEXTCCL060004 | Trench Backfilling | 2027-06-13 → 2027-06-09 (-4d) | 2027-06-29 → 2027-06-26 (-3d) |  | 27.63d → 30.23d |
| 17 | **CCTV Works** | 2027-05-20 → 2027-05-27 (+7d) | 2027-07-18 → 2027-07-25 (+7d) |  |  |
| TAEXCCCL060001 | Pipe Installation with manhole | 2027-05-20 → 2027-05-27 (+7d) | 2027-06-03 → 2027-06-10 (+7d) |  | -25.25d → -31.25d |
| TAEXCCCL060002 | CCTV Swiches Lighting panels Installation | 2027-06-03 → 2027-06-10 (+7d) | 2027-06-19 → 2027-06-26 (+7d) |  | 21.75d → 15.75d |
| TAEXCCCL060003 | Cable laying and connected with Panels | 2027-06-19 → 2027-06-26 (+7d) | 2027-06-30 → 2027-07-07 (+7d) |  | 21.75d → 15.75d |
| TAEXCCCL060004 | Pole Installation with IP Outdoor CCTV POE Camera | 2027-06-30 → 2027-07-07 (+7d) | 2027-07-18 → 2027-07-25 (+7d) |  | 21.75d → 15.75d |
| 16 | **Potable Networks** |  | 2027-01-26 → 2027-01-31 (+5d) |  |  |
| TAEXPTCL060004 | Backfilling Works for Trench |  | 2027-01-26 → 2027-01-31 (+5d) |  | 136.85d → 132.25d |
| 3 | **TSE Networks** |  | 2027-04-15 → 2027-04-01 (-14d) |  |  |
| TAEXTSCL060004 | Backfilling Works for Trench |  | 2027-04-10 → 2027-03-11 (-30d) |  | 84.57d → 109.97d |
| TAEXTSCL060007 | Inspection Test |  | 2027-04-15 → 2027-04-01 (-14d) | 69% → 80% | 102.83d → 114.1d |
| TAEXTSCL060006 | Valve Chamber works |  | 2027-04-13 → 2027-03-13 (-31d) | 85% → 95% | 102.83d → 130.67d |
| TAEXTSCL060005 | Install Valves with fittings |  | 2027-04-11 → 2027-03-11 (-31d) | 85% → 95% | 83.97d → 109.77d |
| 14 | **Sewerage Networks** |  | 2027-02-22 → 2027-02-25 (+3d) |  |  |
| TAEXSWCL060006 | Leakage Test |  | 2027-02-22 → 2027-02-25 (+3d) | 55% → 75% | 135.65d → 132.2d |
| TAEXSWCL0600031 | Install GRP Pipes & Fittings Part 01 |  | 2026-11-16 → 2026-11-23 (+7d) |  | 203.15d → 197.75d |
| TAEXSWCL0600051 | Manhole Installation with backfilling Part 01 |  | 2026-12-29 → 2027-01-05 (+7d) |  | 181.4d → 176d |
| TAEXSWCL0600041 | Backfilling Works for Trench Part 01 | 2026-11-22 → 2026-11-29 (+7d) | 2026-12-03 → 2026-12-10 (+7d) |  | 203.15d → 197.75d |
| 4 | **Storm Networks** |  | 2027-02-20 → 2027-02-25 (+5d) |  |  |
| TAEXSTCL060001 | Excavation works for Trench |  | 2026-11-17 → 2026-11-24 (+7d) |  | 25.62d → 27.62d |
| TAEXSTCL060002 | Bedding Works |  | 2026-11-28 → 2026-12-05 (+7d) |  | 85.54d → 81.49d |
| TAEXSTCL060003 | Install GRP Pipes & Fittings |  | 2026-11-28 → 2026-12-05 (+7d) |  | 85.54d → 81.49d |
| TAEXSTCL060005 | Manhole Installation with backfilling |  | 2026-12-27 → 2027-01-03 (+7d) |  | 85.54d → 81.49d |
| TAEXSTCL060004 | Backfilling Works for Trench |  | 2026-12-15 → 2026-12-22 (+7d) |  | 85.54d → 81.49d |
| TAEXSTCL060007 | Leakage Test |  | 2027-02-20 → 2027-02-25 (+5d) | 60% → 85% | 41d → 36.95d |
| TAEXSTCL060006 | Install Catch Basin with UPVC Pipes & Fittings |  | 2027-02-18 → 2027-02-24 (+6d) | 85% → 95% | 41d → 36.95d |
| 2 | **Local Road 07** |  | 2027-08-03 → 2027-08-08 (+5d) |  |  |
| 12 | **Road Works** |  | 2027-08-03 → 2027-08-08 (+5d) |  |  |
| TAEXRDCL070008 | Precast Concret Kerps | 2027-05-24 → 2027-05-29 (+5d) | 2027-06-14 → 2027-06-19 (+5d) |  | -1.56d → -5.94d |
| TAEXRDCL070007 | BWC Asphalt Wearing Course with RC | 2027-06-14 → 2027-06-19 (+5d) | 2027-06-15 → 2027-06-20 (+5d) |  | -0.56d → -4.94d |
| TAEXRDCL070009 | Precast Interlock Works | 2027-06-24 → 2027-06-29 (+5d) | 2027-07-13 → 2027-07-18 (+5d) |  | -0.56d → -4.94d |
| TAEXRDCL070010 | Stone Paving works | 2027-07-13 → 2027-07-18 (+5d) | 2027-07-31 → 2027-08-04 (+4d) |  | -0.56d → -4.94d |
| TAEXRDCL070011 | Road Marking | 2027-07-31 → 2027-08-04 (+4d) | 2027-08-01 → 2027-08-05 (+4d) |  | -0.56d → -4.94d |
| TAEXRDCL070012 | Traffic Sinage | 2027-08-01 → 2027-08-05 (+4d) | 2027-08-03 → 2027-08-08 (+5d) |  | -0.56d → -4.94d |
| 1 | **Electrical Works** | 2027-05-10 → 2027-05-03 (-7d) | 2027-08-03 → 2027-07-27 (-7d) |  |  |
| TAEXELCL070001 | Trench Cut off | 2027-05-10 → 2027-05-03 (-7d) | 2027-05-24 → 2027-05-17 (-7d) |  | -8.88d → -0.18d |
| TAEXELCL070002 | Drawpit and PVC Pipes Installation | 2027-05-24 → 2027-05-17 (-7d) | 2027-06-02 → 2027-05-26 (-7d) |  | 29.77d → 35.77d |

| ID | Task | Start | Finish | Complete | Total float |
| --- | --- | --- | --- | --- | --- |
| TAEXELCL070003 | Road Crossing Ducts | 2027-06-02 → 2027-05-26 (-7d) | 2027-06-05 → 2027-05-29 (-7d) |  | 29.77d → 35.77d |
| TAEXELCL070006 | Poles RC Foundation | 2027-06-02 → 2027-05-26 (-7d) | 2027-06-06 → 2027-05-30 (-7d) |  | 41.77d → 47.77d |
| TAEXELCL070004 | Trench Backfilling | 2027-06-05 → 2027-05-29 (-7d) | 2027-06-16 → 2027-06-09 (-7d) |  | 29.77d → 35.77d |
| TAEXELCL070008 | Lighting Pole Installation with Luminares | 2027-06-06 → 2027-05-30 (-7d) | 2027-06-12 → 2027-06-05 (-7d) |  | 43.77d → 49.77d |
| TAEXELCL070005 | Cables Pulling | 2027-06-16 → 2027-06-09 (-7d) | 2027-06-20 → 2027-06-13 (-7d) |  | 29.77d → 35.77d |
| TAEXELCL070007 | Earthing cables | 2027-08-01 → 2027-07-25 (-7d) | 2027-08-03 → 2027-07-27 (-7d) |  | -6.23d → -0.23d |
| 2 | **Telecommunication Works** | 2027-06-05 → 2027-05-23 (-13d) | 2027-06-30 → 2027-06-26 (-4d) |  |  |
| TAEXTCCL070001 | Trench Cut off | 2027-06-05 → 2027-05-23 (-13d) | 2027-06-12 → 2027-05-30 (-13d) |  | -20.11d → -9.59d |
| TAEXTCCL070002 | Drawpit and PVC Pipes Installation | 2027-06-12 → 2027-06-07 (-5d) | 2027-06-16 → 2027-06-12 (-4d) |  | -14.11d → -10.77d |
| TAEXTCCL070003 | Road Crossing Ducts | 2027-06-16 → 2027-06-12 (-4d) | 2027-06-19 → 2027-06-14 (-5d) |  | 26.89d → 30.23d |
| TAEXTCCL070004 | Trench Backfilling | 2027-06-19 → 2027-06-14 (-5d) | 2027-06-30 → 2027-06-26 (-4d) |  | 26.89d → 30.23d |
| 18 | **CCTV Works** | 2027-06-03 → 2027-06-10 (+7d) | 2027-07-25 → 2027-08-01 (+7d) |  |  |
| TAEXCCCL070001 | Pipe Installation with manhole | 2027-06-03 → 2027-06-10 (+7d) | 2027-06-14 → 2027-06-21 (+7d) |  | -25.25d → -31.25d |
| TAEXCCCL070002 | CCTV Swiches Lighting panels Installation | 2027-06-14 → 2027-06-21 (+7d) | 2027-06-28 → 2027-07-05 (+7d) |  | 15.75d → 9.75d |
| TAEXCCCL070003 | Cable laying and connected with Panels | 2027-06-28 → 2027-07-05 (+7d) | 2027-07-10 → 2027-07-17 (+7d) |  | 15.75d → 9.75d |
| TAEXCCCL070004 | Pole Installation with IP Outdoor CCTV POE Camera | 2027-07-10 → 2027-07-17 (+7d) | 2027-07-25 → 2027-08-01 (+7d) |  | 15.75d → 9.75d |
| 3 | **Potable Networks** |  | 2027-04-17 → 2027-04-22 (+5d) |  |  |
| TAEXPTCL070004 | Backfilling Works for Trench |  | 2027-02-02 → 2027-02-08 (+6d) |  | 121.27d → 116.67d |
| TAEXPTCL070005 | Install Valves with fittings |  | 2027-02-02 → 2027-02-08 (+6d) |  | 121.27d → 116.67d |
| TAEXPTCL070006 | Install fire hydrent | 2027-01-25 → 2026-11-21 A (-65d) | 2027-01-31 → 2027-02-01 (+1d) | 0% → 80% | 109.3d → 108.7d |
| TAEXPTCL070007 | Valve Chamber works | 2027-03-27 → 2027-04-01 (+5d) | 2027-04-12 → 2027-04-18 (+6d) |  | 75.5d → 70.9d |
| TAEXPTCL070008 | Inspection Test | 2027-04-12 → 2027-04-18 (+6d) | 2027-04-17 → 2027-04-22 (+5d) |  | 94.5d → 89.9d |
| 4 | **TSE Networks** |  | 2027-04-15 → 2026-12-06 (-130d) |  |  |
| TAEXTSCL070005 | Install Valves with fittings |  | 2027-04-13 → 2026-11-22 A (-142d) | 85% → 100% | 95.12d → none |
| TAEXTSCL070006 | Valve Chamber works |  | 2027-04-15 → 2026-11-22 A (-144d) | 85% → 100% | 95.12d → none |
| TAEXTSCL0700041 | Backfilling Works for Trench Part 01 | 2026-11-19 → 2026-11-26 (+7d) | 2026-11-29 → 2026-12-06 (+7d) |  | 170.07d → 164.07d |
| 5 | **Storm Networks** |  | 2027-02-16 → 2027-02-23 (+7d) |  |  |
| TAEXSTCL0700051 | Manhole Installation with backfilling Part 01 |  | 2026-12-09 → 2026-12-16 (+7d) |  |  |
| TAEXSTCL0700041 | Backfilling Works for Trench Part 01 | 2026-11-17 → 2026-11-23 (+6d) | 2026-11-26 → 2026-12-01 (+5d) |  | 85.68d → 87.36d |
| TAEXSTCL070006 | Install Catch Basin with UPVC Pipes & Fittings | 2027-02-06 → 2027-02-13 (+7d) | 2027-02-16 → 2027-02-23 (+7d) |  |  |
| 6 | **Local Road 08** |  | 2027-08-07 → 2027-08-14 (+7d) |  |  |
| 12 | **Road Works** |  | 2027-08-02 → 2027-08-07 (+5d) |  |  |
| TAEXRDCL0800011 | Road Excavation and Disposal Part 01 | 2027-02-21 → 2027-02-25 (+4d) | 2027-02-25 → 2027-03-03 (+6d) |  | 52.86d → 48.81d |
| TAEXRDCL0800021 | Backfilling Works for Road Part 01 | 2027-02-27 → 2027-03-03 (+4d) | 2027-03-06 → 2027-03-11 (+5d) |  | 52.86d → 48.81d |
| TAEXRDCL0800031 | Subgrade Works Part 01 | 2027-03-07 → 2027-03-11 (+4d) | 2027-03-10 → 2027-03-16 (+6d) |  | 52.86d → 48.81d |
| TAEXRDCL080004 | ABC aggregate Base Course Works | 2027-03-11 → 2027-03-16 (+5d) | 2027-03-15 → 2027-03-21 (+6d) |  | 52.86d → 48.81d |
| TAEXRDCL080005 | MBC1 layer | 2027-03-16 → 2027-03-21 (+5d) | 2027-03-16 → 2027-03-22 (+6d) |  | 52.86d → 48.81d |
| TAEXRDCL080006 | BBC Base Course | 2027-03-17 → 2027-03-22 (+5d) | 2027-03-21 → 2027-03-27 (+6d) |  | 52.86d → 48.81d |
| TAEXRDCL080008 | Precast Concret Kerps | 2027-06-14 → 2027-06-19 (+5d) | 2027-06-30 → 2027-07-05 (+5d) |  | -1.56d → -5.94d |
| TAEXRDCL080007 | BWC Asphalt Wearing Course with RC | 2027-06-30 → 2027-07-05 (+5d) | 2027-07-01 → 2027-07-06 (+5d) |  | 0.44d → -3.94d |
| TAEXRDCL080009 | Precast Interlock Works | 2027-07-01 → 2027-07-06 (+5d) | 2027-07-21 → 2027-07-26 (+5d) |  | 0.44d → -3.94d |
| TAEXRDCL080010 | Stone Paving works | 2027-07-21 → 2027-07-26 (+5d) | 2027-07-29 → 2027-08-03 (+5d) |  | 0.44d → -3.94d |
| TAEXRDCL080011 | Road Marking | 2027-07-29 → 2027-08-03 (+5d) | 2027-07-31 → 2027-08-04 (+4d) |  | 0.44d → -3.94d |
| TAEXRDCL080012 | Traffic Sinage | 2027-07-31 → 2027-08-04 (+4d) | 2027-08-02 → 2027-08-07 (+5d) |  | 0.44d → -3.94d |
| 1 | **Electrical Works** |  | 2027-08-05 → 2027-07-29 (-7d) |  |  |
| TAEXELCL080001 | Trench Cut off | 2027-05-24 → 2027-05-17 (-7d) | 2027-06-05 → 2027-05-29 (-7d) |  | -8.88d → -0.18d |
| TAEXELCL080002 | Drawpit and PVC Pipes Installation | 2027-06-05 → 2027-05-29 (-7d) | 2027-06-10 → 2027-06-03 (-7d) |  | 20.77d → 26.77d |
| TAEXELCL080003 | Road Crossing Ducts | 2027-06-10 → 2027-06-03 (-7d) | 2027-06-13 → 2027-06-06 (-7d) |  | 20.77d → 26.77d |
| TAEXELCL080006 | Poles RC Foundation | 2027-06-10 → 2027-06-03 (-7d) | 2027-06-15 → 2027-06-08 (-7d) |  | 34.77d → 40.77d |
| TAEXELCL080004 | Trench Backfilling | 2027-06-13 → 2027-06-06 (-7d) | 2027-06-29 → 2027-06-22 (-7d) |  | 20.77d → 26.77d |
| TAEXELCL080008 | Lighting Pole Installation with Luminares | 2027-06-15 → 2027-06-08 (-7d) | 2027-06-22 → 2027-06-15 (-7d) |  | 34.77d → 40.77d |
| TAEXELCL080005 | Cables Pulling | 2027-06-29 → 2027-06-22 (-7d) | 2027-07-03 → 2027-06-26 (-7d) |  | 20.77d → 26.77d |
| TAEXELCL080007 | Earthing cables | 2027-08-03 → 2027-07-27 (-7d) | 2027-08-05 → 2027-07-29 (-7d) |  | -6.23d → -0.23d |
| 2 | **Telecommunication Works** | 2027-06-12 → 2027-05-30 (-13d) | 2027-07-18 → 2027-07-06 (-12d) |  |  |
| TAEXTCCL080001 | Trench Cut off | 2027-06-12 → 2027-05-30 (-13d) | 2027-06-23 → 2027-06-10 (-13d) |  | -20.11d → -9.59d |
| TAEXTCCL080002 | Drawpit and PVC Pipes Installation | 2027-06-23 → 2027-06-12 (-11d) | 2027-06-29 → 2027-06-17 (-12d) |  | -20.11d → -10.77d |
| TAEXTCCL080003 | Road Crossing Ducts | 2027-06-29 → 2027-06-17 (-12d) | 2027-07-01 → 2027-06-20 (-11d) |  | 11.89d → 21.23d |
| TAEXTCCL080004 | Trench Backfilling | 2027-07-01 → 2027-06-20 (-11d) | 2027-07-18 → 2027-07-06 (-12d) |  | 11.89d → 21.23d |
| 19 | **CCTV Works** | 2027-06-14 → 2027-06-21 (+7d) | 2027-08-07 → 2027-08-14 (+7d) |  |  |
| TAEXCCCL080001 | Pipe Installation with manhole | 2027-06-14 → 2027-06-21 (+7d) | 2027-06-23 → 2027-06-30 (+7d) |  | -25.25d → -31.25d |
| TAEXCCCL080002 | CCTV Swiches Lighting panels Installation | 2027-06-23 → 2027-06-30 (+7d) | 2027-07-08 → 2027-07-15 (+7d) |  | 4.75d → -1.25d |
| TAEXCCCL080003 | Cable laying and connected with Panels | 2027-07-08 → 2027-07-15 (+7d) | 2027-07-20 → 2027-07-27 (+7d) |  | 4.75d → -1.25d |
| TAEXCCCL080004 | Pole Installation with IP Outdoor CCTV POE Camera | 2027-07-20 → 2027-07-27 (+7d) | 2027-08-07 → 2027-08-14 (+7d) |  | 4.75d → -1.25d |
| 3 | **Potable Networks** |  | 2027-04-21 → 2027-04-27 (+6d) |  |  |
| TAEXPTCL080001 | Excavation works for Trench |  | 2026-11-28 → 2026-12-05 (+7d) | 90% → 95% | 75.5d → 70.9d |
| TAEXPTCL080003 | Install Pipes & Fittings |  | 2027-01-26 → 2027-01-31 (+5d) |  | 125.8d → 121.2d |
| TAEXPTCL080002 | Bedding Works |  | 2026-11-29 → 2026-12-05 (+6d) |  | 173.75d → 169.4d |
| TAEXPTCL080006 | Install fire hydrent |  | 2027-02-21 → 2027-02-22 (+1d) |  | 118.2d → 117.6d |
| TAEXPTCL080007 | Valve Chamber works |  | 2027-04-17 → 2027-04-22 (+5d) |  | 75.5d → 70.9d |
| TAEXPTCL080004 | Backfilling Works for Trench | 2027-01-26 → 2027-01-31 (+5d) | 2027-02-13 → 2027-02-17 (+4d) |  | 125.8d → 121.2d |

| ID | Task | Start | Finish | Complete | Total float |
| --- | --- | --- | --- | --- | --- |
| TAEXPTCL080005 | Install Valves with fittings | 2027-02-13 → 2027-02-18 (+5d) | 2027-02-17 → 2027-02-23 (+6d) |  | 121.27d → 116.67d |
| TAEXPTCL080008 | Inspection Test | 2027-04-17 → 2027-04-22 (+5d) | 2027-04-21 → 2027-04-27 (+6d) |  | 86.5d → 81.9d |
| 4 | **TSE Networks** |  | 2027-04-26 → 2027-05-02 (+6d) |  |  |
| TAEXTSCL080001 | Excavation works for Trench |  | 2026-11-23 → 2026-11-28 (+5d) | 60% → 90% | 70.7d → 96.1d |
| TAEXTSCL080005 | Install Valves with fittings |  | 2026-12-21 → 2026-12-20 (-1d) | 15% → 70% | 177.2d → 186.65d |
| TAEXTSCL080006 | Valve Chamber works |  | 2027-01-05 → 2026-12-26 (-10d) | 15% → 70% | 177.2d → 186.65d |
| TAEXTSCL080002 | Bedding Works |  | 2026-11-29 → 2026-12-06 (+7d) | 60% → 85% | 173.75d → 170.65d |
| TAEXTSCL080003 | Install Pipes & Fittings |  | 2026-12-03 → 2026-12-07 (+4d) | 60% → 85% | 173.75d → 170.65d |
| TAEXTSCL080004 | Backfilling Works for Trench | 2026-12-03 → 2026-11-21 A (-12d) | 2026-12-21 → 2026-12-20 (-1d) | 0% → 25% | 177.2d → 186.65d |
| TAEXTSCL080007 | Inspection Test | 2027-04-21 → 2027-04-27 (+6d) | 2027-04-26 → 2027-05-02 (+6d) |  | 86.5d → 81.9d |
| 16 | **Sewerage Networks** |  | 2026-12-27 → 2027-01-03 (+7d) |  |  |
| TAEXSWCL0800051 | Manhole Installation with backfilling Part 01 |  | 2026-12-27 → 2027-01-03 (+7d) |  | 184d → 178d |
| 5 | **Storm Networks** |  | 2026-12-20 → 2026-12-27 (+7d) |  |  |
| TAEXSTCL0800051 | Manhole Installation with backfilling Part 01 |  | 2026-12-08 → 2026-12-15 (+7d) |  | 25.62d → 21.86d |
| TAEXSTCL080006 | Install Catch Basin with UPVC Pipes & Fittings |  | 2026-12-20 → 2026-12-27 (+7d) |  | 25.62d → 21.86d |
| 3 | **Local Road 09** |  | 2027-08-08 → 2027-08-12 (+4d) |  |  |
| 12 | **Road Works** |  | 2027-08-04 → 2027-08-09 (+5d) |  |  |
| TAEXRDCL090008 | Precast Concret Kerps | 2027-06-30 → 2027-07-05 (+5d) | 2027-07-15 → 2027-07-20 (+5d) |  | -1.56d → -5.94d |
| TAEXRDCL090007 | BWC Asphalt Wearing Course with RC | 2027-07-15 → 2027-07-20 (+5d) | 2027-07-17 → 2027-07-21 (+4d) |  | -1.56d → -5.94d |
| TAEXRDCL090009 | Precast Interlock Works | 2027-07-17 → 2027-07-21 (+4d) | 2027-07-31 → 2027-08-04 (+4d) |  | -1.56d → -5.94d |
| TAEXRDCL090010 | Stone Paving works | 2027-07-31 → 2027-08-04 (+4d) | 2027-08-02 → 2027-08-07 (+5d) |  | -1.56d → -5.94d |
| TAEXRDCL090011 | Road Marking | 2027-08-02 → 2027-08-07 (+5d) | 2027-08-03 → 2027-08-08 (+5d) |  | -1.56d → -5.94d |
| TAEXRDCL090012 | Traffic Sinage | 2027-08-03 → 2027-08-08 (+5d) | 2027-08-04 → 2027-08-09 (+5d) |  | -1.56d → -5.94d |
| 1 | **Electrical Works** | 2027-06-05 → 2027-05-29 (-7d) | 2027-08-08 → 2027-08-01 (-7d) |  |  |
| TAEXELCL090001 | Trench Cut off | 2027-06-05 → 2027-05-29 (-7d) | 2027-06-17 → 2027-06-10 (-7d) |  | -8.88d → -0.18d |
| TAEXELCL090002 | Drawpit and PVC Pipes Installation | 2027-06-17 → 2027-06-10 (-7d) | 2027-06-28 → 2027-06-21 (-7d) |  | 12.77d → 18.77d |
| TAEXELCL090003 | Road Crossing Ducts | 2027-06-28 → 2027-06-21 (-7d) | 2027-06-30 → 2027-06-23 (-7d) |  | 12.77d → 18.77d |
| TAEXELCL090006 | Poles RC Foundation | 2027-06-28 → 2027-06-21 (-7d) | 2027-07-01 → 2027-06-24 (-7d) |  | 22.77d → 28.77d |
| TAEXELCL090004 | Trench Backfilling | 2027-06-30 → 2027-06-23 (-7d) | 2027-07-12 → 2027-07-05 (-7d) |  | 12.77d → 18.77d |
| TAEXELCL090008 | Lighting Pole Installation with Luminares | 2027-07-01 → 2027-06-24 (-7d) | 2027-07-06 → 2027-06-29 (-7d) |  | 22.77d → 28.77d |
| TAEXELCL090005 | Cables Pulling | 2027-07-12 → 2027-07-05 (-7d) | 2027-07-14 → 2027-07-07 (-7d) |  | 12.77d → 18.77d |
| TAEXELCL090007 | Earthing cables | 2027-08-05 → 2027-07-29 (-7d) | 2027-08-08 → 2027-08-01 (-7d) |  | -6.23d → -0.23d |
| 2 | **Telecommunication Works** | 2027-06-23 → 2027-06-10 (-13d) | 2027-07-18 → 2027-07-06 (-12d) |  |  |
| TAEXTCCL090001 | Trench Cut off | 2027-06-23 → 2027-06-10 (-13d) | 2027-06-29 → 2027-06-16 (-13d) |  | -20.11d → -9.59d |
| TAEXTCCL090002 | Drawpit and PVC Pipes Installation | 2027-06-29 → 2027-06-17 (-12d) | 2027-07-04 → 2027-06-22 (-12d) |  | -20.11d → -10.77d |
| TAEXTCCL090003 | Road Crossing Ducts | 2027-07-04 → 2027-06-22 (-12d) | 2027-07-06 → 2027-06-24 (-12d) |  | 11.89d → 21.23d |
| TAEXTCCL090004 | Trench Backfilling | 2027-07-06 → 2027-06-24 (-12d) | 2027-07-18 → 2027-07-06 (-12d) |  | 11.89d → 21.23d |
| 20 | **CCTV Works** | 2027-06-23 → 2027-06-30 (+7d) | 2027-08-05 → 2027-08-12 (+7d) |  |  |
| TAEXCCCL090001 | Pipe Installation with manhole | 2027-06-23 → 2027-06-30 (+7d) | 2027-07-01 → 2027-07-08 (+7d) |  | -25.25d → -31.25d |
| TAEXCCCL090002 | CCTV Swiches Lighting panels Installation | 2027-07-01 → 2027-07-08 (+7d) | 2027-07-13 → 2027-07-20 (+7d) |  | 5.75d → -0.25d |
| TAEXCCCL090003 | Cable laying and connected with Panels | 2027-07-13 → 2027-07-20 (+7d) | 2027-07-22 → 2027-07-29 (+7d) |  | 5.75d → -0.25d |
| TAEXCCCL090004 | Pole Installation with IP Outdoor CCTV POE Camera | 2027-07-22 → 2027-07-29 (+7d) | 2027-08-05 → 2027-08-12 (+7d) |  | 5.75d → -0.25d |
| 3 | **Potable Networks** |  | 2027-05-06 → 2027-05-12 (+6d) |  |  |
| TAEXPTCL090005 | Install Valves with fittings |  | 2027-02-04 → 2027-02-10 (+6d) |  | 121.27d → 116.67d |
| TAEXPTCL090006 | Install fire hydrent | 2027-01-31 → 2027-02-01 (+1d) | 2027-02-07 → 2027-02-08 (+1d) |  | 109.3d → 108.7d |
| TAEXPTCL090007 | Valve Chamber works | 2027-04-17 → 2027-04-22 (+5d) | 2027-05-03 → 2027-05-09 (+6d) |  | 75.5d → 70.9d |
| TAEXPTCL090008 | Inspection Test | 2027-05-03 → 2027-05-09 (+6d) | 2027-05-06 → 2027-05-12 (+6d) |  | 77.5d → 72.9d |
| 4 | **TSE Networks** |  | 2027-04-29 → 2027-03-30 (-30d) |  |  |
| TAEXTSCL090005 | Install Valves with fittings |  | 2027-04-13 → 2027-03-14 (-30d) |  | 83.97d → 109.77d |
| TAEXTSCL090006 | Valve Chamber works | 2027-04-13 → 2027-03-14 (-30d) | 2027-04-29 → 2027-03-30 (-30d) |  | 83.97d → 109.77d |
| 5 | **Storm Networks** |  | 2027-01-19 → 2027-01-26 (+7d) |  |  |
| TAEXSTCL090006 | Install Catch Basin with UPVC Pipes & Fittings | 2027-01-10 → 2027-01-17 (+7d) | 2027-01-19 → 2027-01-26 (+7d) |  | 8.45d → 4.45d |
| 4 | **Upgrade Local 06** |  | 2027-08-22 → 2027-08-29 (+7d) |  |  |
| 22 | **Electrical Works** |  | 2027-08-10 → 2027-08-03 (-7d) |  |  |
| TAEXELCU060002 | Drawpit and PVC Pipes Installation |  | 2027-07-19 → 2027-07-10 (-9d) |  | -5.86d → 2.84d |
| TAEXELCU060003 | Road Crossing Ducts |  | 2027-07-21 → 2027-07-12 (-9d) |  | -5.86d → 2.84d |
| TAEXELCU060001 | Trench Cut off | 2027-07-03 → 2026-11-22 A (-223d) | 2027-07-14 → 2027-07-05 (-9d) | 0% → 27% | -8.88d → -0.18d |
| TAEXELCU060006 | Poles RC Foundation | 2027-07-19 → 2027-07-10 (-9d) | 2027-07-24 → 2027-07-14 (-10d) |  | 1.15d → 9.85d |
| TAEXELCU060004 | Trench Backfilling | 2027-07-21 → 2027-07-12 (-9d) | 2027-08-02 → 2027-07-24 (-9d) |  | -5.86d → 2.84d |
| TAEXELCU060008 | Lighting Pole Installation with Luminares | 2027-07-24 → 2027-07-14 (-10d) | 2027-07-31 → 2027-07-21 (-10d) |  | 1.15d → 9.85d |
| TAEXELCU060005 | Cables Pulling | 2027-08-02 → 2027-07-24 (-9d) | 2027-08-07 → 2027-07-28 (-10d) |  | -5.86d → 2.84d |
| TAEXELCU060007 | Earthing cables | 2027-08-08 → 2027-08-01 (-7d) | 2027-08-10 → 2027-08-03 (-7d) |  | -6.23d → -0.23d |
| 23 | **CCTV Works** | 2027-07-10 → 2027-07-17 (+7d) | 2027-08-22 → 2027-08-29 (+7d) |  |  |
| TAEXCCCU060001 | Pipe Installation with manhole | 2027-07-10 → 2027-07-17 (+7d) | 2027-07-19 → 2027-07-26 (+7d) |  | -20.25d → -26.25d |
| TAEXCCCU060002 | CCTV Swiches Lighting panels Installation | 2027-07-19 → 2027-07-26 (+7d) | 2027-07-31 → 2027-08-07 (+7d) |  | -8.25d → -14.25d |
| TAEXCCCU060003 | Cable laying and connected with Panels | 2027-07-31 → 2027-08-07 (+7d) | 2027-08-10 → 2027-08-17 (+7d) |  | -8.25d → -14.25d |
| TAEXCCCU060004 | Pole Installation with IP Outdoor CCTV POE Camera | 2027-08-10 → 2027-08-17 (+7d) | 2027-08-22 → 2027-08-29 (+7d) |  | -8.25d → -14.25d |
| 7 | **Upgrade Local 07** |  | 2027-08-31 → 2027-09-06 (+6d) |  |  |
| 23 | **Electrical Works** |  | 2027-08-12 → 2027-08-05 (-7d) |  |  |
| TAEXELCU070003 | Road Crossing Ducts |  | 2027-07-28 → 2027-07-18 (-10d) |  | -6.39d → 2.31d |

| ID | Task | Start | Finish | Complete | Total float |
| --- | --- | --- | --- | --- | --- |
| TAEXELCU070002 | Drawpit and PVC Pipes Installation |  | 2027-07-26 → 2027-07-15 (-11d) |  | -6.39d → 2.31d |
| TAEXELCU070001 | Trench Cut off | 2027-07-14 → 2027-07-05 (-9d) | 2027-07-22 → 2027-07-13 (-9d) |  | -8.88d → -0.18d |
| TAEXELCU070006 | Poles RC Foundation | 2027-07-26 → 2027-07-15 (-11d) | 2027-07-29 → 2027-07-19 (-10d) |  | -2.68d → 6.02d |
| TAEXELCU070004 | Trench Backfilling | 2027-07-28 → 2027-07-18 (-10d) | 2027-08-07 → 2027-07-27 (-11d) |  | -6.39d → 2.31d |
| TAEXELCU070008 | Lighting Pole Installation with Luminares | 2027-07-29 → 2027-07-19 (-10d) | 2027-08-04 → 2027-07-25 (-10d) |  | -2.68d → 6.02d |
| TAEXELCU070005 | Cables Pulling | 2027-08-07 → 2027-07-27 (-11d) | 2027-08-10 → 2027-07-31 (-10d) |  | -6.39d → 2.31d |
| TAEXELCU070007 | Earthing cables | 2027-08-10 → 2027-08-03 (-7d) | 2027-08-12 → 2027-08-05 (-7d) |  | -6.39d → -0.23d |
| 24 | **CCTV Works** | 2027-07-19 → 2027-07-26 (+7d) | 2027-08-31 → 2027-09-06 (+6d) |  |  |
| TAEXCCCU070001 | Pipe Installation with manhole | 2027-07-19 → 2027-07-26 (+7d) | 2027-07-28 → 2027-08-04 (+7d) |  | -20.25d → -26.25d |
| TAEXCCCU070002 | CCTV Swiches Lighting panels Installation | 2027-07-28 → 2027-08-04 (+7d) | 2027-08-09 → 2027-08-16 (+7d) |  | -16.25d → -22.25d |
| TAEXCCCU070003 | Cable laying and connected with Panels | 2027-08-09 → 2027-08-16 (+7d) | 2027-08-19 → 2027-08-26 (+7d) |  | -16.25d → -22.25d |
| TAEXCCCU070004 | Pole Installation with IP Outdoor CCTV POE Camera | 2027-08-19 → 2027-08-26 (+7d) | 2027-08-31 → 2027-09-06 (+6d) |  | -16.25d → -22.25d |
| 8 | **Upgrade Local 08** |  | 2027-08-31 → 2027-09-06 (+6d) |  |  |
| 24 | **Electrical Works** |  | 2027-08-15 → 2027-08-08 (-7d) |  |  |
| TAEXELCU080001 | Trench Cut off |  | 2027-07-24 → 2027-07-14 (-10d) |  | -8.88d → -0.18d |
| TAEXELCU080004 | Trench Backfilling | 2027-07-24 → 2027-07-14 (-10d) | 2027-08-02 → 2027-07-24 (-9d) |  | -0.88d → 7.82d |
| TAEXELCU080006 | Poles RC Foundation | 2027-07-24 → 2027-07-14 (-10d) | 2027-07-27 → 2027-07-18 (-9d) |  | -0.88d → 7.82d |
| TAEXELCU080008 | Lighting Pole Installation with Luminares | 2027-07-27 → 2027-07-18 (-9d) | 2027-08-02 → 2027-07-24 (-9d) |  | -0.88d → 7.82d |
| TAEXELCU080005 | Cables Pulling | 2027-08-02 → 2027-07-24 (-9d) | 2027-08-05 → 2027-07-27 (-9d) |  | -0.88d → 7.82d |
| TAEXELCU080007 | Earthing cables | 2027-08-12 → 2027-08-05 (-7d) | 2027-08-15 → 2027-08-08 (-7d) |  | -6.39d → -0.23d |
| 25 | **CCTV Works** | 2027-07-19 → 2027-07-26 (+7d) | 2027-08-31 → 2027-09-06 (+6d) |  |  |
| TAEXCCCU080001 | Pipe Installation with manhole | 2027-07-19 → 2027-07-26 (+7d) | 2027-07-28 → 2027-08-04 (+7d) |  | -20.25d → -26.25d |
| TAEXCCCU080002 | CCTV Swiches Lighting panels Installation | 2027-07-28 → 2027-08-04 (+7d) | 2027-08-09 → 2027-08-16 (+7d) |  | -16.25d → -22.25d |
| TAEXCCCU080003 | Cable laying and connected with Panels | 2027-08-09 → 2027-08-16 (+7d) | 2027-08-19 → 2027-08-26 (+7d) |  | -16.25d → -22.25d |
| TAEXCCCU080004 | Pole Installation with IP Outdoor CCTV POE Camera | 2027-08-19 → 2027-08-26 (+7d) | 2027-08-31 → 2027-09-06 (+6d) |  | -16.25d → -22.25d |
| 9 | **Upgrade Local 09** |  | 2027-09-08 → 2027-09-15 (+7d) |  |  |
| 26 | **Electrical Works** |  | 2027-08-17 → 2027-08-10 (-7d) |  |  |
| TAEXELCU090001 | Trench Cut off | 2027-07-24 → 2027-07-14 (-10d) | 2027-08-01 → 2027-07-22 (-10d) |  | -8.88d → -0.18d |
| TAEXELCU090004 | Trench Backfilling | 2027-08-01 → 2027-07-22 (-10d) | 2027-08-10 → 2027-08-01 (-9d) |  | -5.88d → 2.82d |
| TAEXELCU090006 | Poles RC Foundation | 2027-08-01 → 2027-07-22 (-10d) | 2027-08-05 → 2027-07-27 (-9d) |  | -8.88d → -0.18d |
| TAEXELCU090008 | Lighting Pole Installation with Luminares | 2027-08-05 → 2027-07-27 (-9d) | 2027-08-11 → 2027-08-02 (-9d) |  | -8.88d → -0.18d |
| TAEXELCU090005 | Cables Pulling | 2027-08-10 → 2027-08-01 (-9d) | 2027-08-14 → 2027-08-04 (-10d) |  | -5.88d → 2.82d |
| TAEXELCU090007 | Earthing cables | 2027-08-15 → 2027-08-08 (-7d) | 2027-08-17 → 2027-08-10 (-7d) |  | -6.39d → -0.23d |
| 1 | **CCTV Works** | 2027-07-28 → 2027-08-04 (+7d) | 2027-09-08 → 2027-09-15 (+7d) |  |  |
| TAEXCCCU090001 | Pipe Installation with manhole | 2027-07-28 → 2027-08-04 (+7d) | 2027-08-05 → 2027-08-12 (+7d) |  | -20.25d → -26.25d |
| TAEXCCCU090002 | CCTV Swiches Lighting panels Installation | 2027-08-05 → 2027-08-12 (+7d) | 2027-08-17 → 2027-08-24 (+7d) |  | -20.25d → -26.25d |
| TAEXCCCU090003 | Cable laying and connected with Panels | 2027-08-17 → 2027-08-24 (+7d) | 2027-08-29 → 2027-09-04 (+6d) |  | -20.25d → -26.25d |
| TAEXCCCU090004 | Pole Installation with IP Outdoor CCTV POE Camera | 2027-08-29 → 2027-09-04 (+6d) | 2027-09-08 → 2027-09-15 (+7d) |  | -20.25d → -26.25d |
| 10 | **Upgrade Local 12** |  | 2027-08-22 → 2027-08-15 (-7d) |  |  |
| 18 | **Road works** | 2027-03-10 → 2027-03-15 (+5d) | 2027-06-15 → 2027-06-21 (+6d) |  |  |
| TAEXRDCU120002 | Precast Concret Kerps | 2027-03-10 → 2027-03-15 (+5d) | 2027-03-30 → 2027-04-05 (+6d) |  | 41d → 36.95d |
| TAEXRDCU120001 | BWC Asphalt Wearing Course with RC | 2027-05-17 → 2027-05-22 (+5d) | 2027-05-17 → 2027-05-23 (+6d) |  | 41d → 36.95d |
| TAEXRDCU120003 | Precast Interlock Works | 2027-05-18 → 2027-05-23 (+5d) | 2027-06-05 → 2027-06-10 (+5d) |  | 41d → 36.95d |
| TAEXRDCU120004 | Stone Paving works | 2027-06-06 → 2027-06-10 (+4d) | 2027-06-10 → 2027-06-16 (+6d) |  | 41d → 36.95d |
| TAEXRDCU120005 | Road Marking | 2027-06-12 → 2027-06-16 (+4d) | 2027-06-12 → 2027-06-17 (+5d) |  | 41d → 36.95d |
| TAEXRDCU120006 | Traffic Sinage | 2027-06-13 → 2027-06-17 (+4d) | 2027-06-15 → 2027-06-21 (+6d) |  | 41d → 36.95d |
| 19 | **Electrical Works** |  | 2027-08-22 → 2027-08-15 (-7d) |  |  |
| TAEXELCU120001 | Trench Cut off |  | 2027-04-14 → 2027-04-13 (-1d) |  | -8.88d → -0.23d |
| TAEXELCU120002 | Drawpit and PVC Pipes Installation |  | 2027-04-17 → 2027-04-15 (-2d) |  | 74.88d → 75.72d |
| TAEXELCU120005 | Cables Pulling |  | 2027-05-26 → 2027-05-17 (-9d) | 27% → 52% | 64.53d → 72.53d |
| TAEXELCU120004 | Trench Backfilling |  | 2027-05-19 → 2027-05-12 (-7d) |  | 64.53d → 72.53d |
| TAEXELCU120006 | Poles RC Foundation | 2027-04-17 → 2027-04-15 (-2d) | 2027-04-25 → 2027-04-24 (-1d) |  | 74.88d → 75.72d |
| TAEXELCU120008 | Lighting Pole Installation with Luminares | 2027-04-25 → 2027-04-24 (-1d) | 2027-05-06 → 2027-05-05 (-1d) |  | 74.88d → 75.72d |
| TAEXELCU120007 | Earthing cables | 2027-08-17 → 2027-08-10 (-7d) | 2027-08-22 → 2027-08-15 (-7d) |  | -6.39d → -0.23d |
| 1 | **Telecommunication Works** | 2027-04-28 → 2027-04-19 (-9d) | 2027-08-08 → 2027-07-27 (-12d) |  |  |
| TAEXTCCU120001 | Trench Cut off | 2027-04-28 → 2027-04-19 (-9d) | 2027-05-16 → 2027-05-06 (-10d) |  | -20.11d → -9.59d |
| TAEXTCCU120002 | Drawpit and PVC Pipes Installation | 2027-07-04 → 2027-06-22 (-12d) | 2027-07-14 → 2027-07-03 (-11d) |  | -20.11d → -10.77d |
| TAEXTCCU120003 | Road Crossing Ducts | 2027-07-14 → 2027-07-03 (-11d) | 2027-07-19 → 2027-07-07 (-12d) |  | -6.11d → 3.23d |
| TAEXTCCU120004 | Trench Backfilling | 2027-07-19 → 2027-07-07 (-12d) | 2027-08-08 → 2027-07-27 (-12d) |  | -6.11d → 3.23d |
| 15 | **CCTV Works** | 2027-04-24 → 2027-05-01 (+7d) | 2027-06-19 → 2027-06-26 (+7d) |  |  |
| TAEXCCCU120001 | Pipe Installation with manhole | 2027-04-24 → 2027-05-01 (+7d) | 2027-05-06 → 2027-05-13 (+7d) |  | -25.25d → -31.25d |
| TAEXCCCU120002 | CCTV Swiches Lighting panels Installation | 2027-05-06 → 2027-05-13 (+7d) | 2027-05-20 → 2027-05-27 (+7d) |  | 46.75d → 40.75d |
| TAEXCCCU120003 | Cable laying and connected with Panels | 2027-05-20 → 2027-05-27 (+7d) | 2027-06-02 → 2027-06-09 (+7d) |  | 46.75d → 40.75d |
| TAEXCCCU120004 | Pole Installation with IP Outdoor CCTV POE Camera | 2027-06-02 → 2027-06-09 (+7d) | 2027-06-19 → 2027-06-26 (+7d) |  | 46.75d → 40.75d |
| 2 | **Potable Networks** | 2026-11-30 → 2026-12-05 (+5d) | 2027-03-30 → 2027-04-05 (+6d) |  |  |
| TAEXPTCU120001 | Excavation works for Trench | 2026-11-30 → 2026-12-05 (+5d) | 2026-12-13 → 2026-12-19 (+6d) |  | 75.5d → 70.9d |
| TAEXPTCU120002 | Bedding Works | 2026-12-14 → 2026-12-19 (+5d) | 2026-12-15 → 2026-12-21 (+6d) |  | 109.5d → 104.9d |
| TAEXPTCU120003 | Install Pipes & Fittings | 2027-01-16 → 2027-01-20 (+4d) | 2027-01-24 → 2027-01-30 (+6d) |  | 83.5d → 78.9d |
| TAEXPTCU120004 | Backfilling Works for Trench | 2027-01-25 → 2027-01-30 (+5d) | 2027-02-14 → 2027-02-20 (+6d) |  | 83.5d → 78.9d |
| TAEXPTCU120005 | Install Valves with fittings | 2027-02-10 → 2027-02-15 (+5d) | 2027-02-14 → 2027-02-20 (+6d) |  | 83.5d → 78.9d |

| ID | Task | Start | Finish | Total float |
| --- | --- | --- | --- | --- |
| TAEXPTCU120006 | Install fire hydrent | 2027-02-15 → 2027-02-20 (+5d) | 2027-02-24 → 2027-03-02 (+6d) | 83.5d → 78.9d |
| TAEXPTCU120007 | Valve Chamber works | 2027-03-07 → 2027-03-11 (+4d) | 2027-03-24 → 2027-03-30 (+6d) | 75.5d → 70.9d |
| TAEXPTCU120008 | Inspection Test | 2027-03-25 → 2027-03-30 (+5d) | 2027-03-30 → 2027-04-05 (+6d) | 109d → 104.4d |
| 3 | **TSE Networks** |  | 2027-05-15 → 2027-04-14 (-31d) |  |
| TAEXTSCU120005 | Install Valves with fittings |  | 2027-04-22 → 2027-03-24 (-29d) | 70.7d → 96.1d |
| TAEXTSCU120006 | Valve Chamber works |  | 2027-05-09 → 2027-04-08 (-31d) | 70.7d → 96.1d |
| TAEXTSCU120001 | Excavation works for Trench | 2027-01-21 → 2026-12-23 (-29d) | 2027-02-16 → 2027-01-18 (-29d) | 70.7d → 96.1d |
| TAEXTSCU120002 | Bedding Works | 2027-02-16 → 2027-01-18 (-29d) | 2027-02-18 → 2027-01-20 (-29d) | 98.7d → 124.1d |
| TAEXTSCU120003 | Install Pipes & Fittings | 2027-03-23 → 2027-02-22 (-29d) | 2027-04-01 → 2027-03-03 (-29d) | 70.7d → 96.1d |
| TAEXTSCU120004 | Backfilling Works for Trench | 2027-04-01 → 2027-03-03 (-29d) | 2027-04-22 → 2027-03-24 (-29d) | 70.7d → 96.1d |
| TAEXTSCU120007 | Inspection Test | 2027-05-09 → 2027-04-08 (-31d) | 2027-05-15 → 2027-04-14 (-31d) | 70.7d → 96.1d |
| 12 | **Sewerage Networks** | 2026-11-24 → 2026-12-01 (+7d) | 2027-02-06 → 2027-02-13 (+7d) |  |
| TAEXSWCU120001 | Excavation works for Trench | 2026-11-24 → 2026-12-01 (+7d) | 2026-12-13 → 2026-12-20 (+7d) | 134.5d → 128.5d |
| TAEXSWCU120002 | Bedding Works | 2026-12-13 → 2026-12-20 (+7d) | 2026-12-17 → 2026-12-24 (+7d) | 149.5d → 143.5d |
| TAEXSWCU120003 | Install GRP Pipes & Fittings | 2026-12-17 → 2026-12-24 (+7d) | 2027-01-03 → 2027-01-10 (+7d) | 149.5d → 143.5d |
| TAEXSWCU120004 | Backfilling Works for Trench | 2027-01-05 → 2027-01-12 (+7d) | 2027-01-20 → 2027-01-27 (+7d) | 149.5d → 143.5d |
| TAEXSWCU120005 | Manhole Installation with backfilling | 2027-01-18 → 2027-01-25 (+7d) | 2027-02-01 → 2027-02-08 (+7d) | 149.5d → 143.5d |
| TAEXSWCU120006 | Leakage Test | 2027-02-01 → 2027-02-08 (+7d) | 2027-02-06 → 2027-02-13 (+7d) | 149.5d → 143.5d |
| 4 | **Storm Networks** |  | 2027-07-03 → 2027-07-01 (-2d) |  |
| TAEXSTCU120001 | Excavation works for Trench |  | 2027-05-03 → 2027-05-02 (-1d) | 38.39d → 39.23d |
| TAEXSTCU120002 | Bedding Works | 2027-05-03 → 2027-05-02 (-1d) | 2027-05-08 → 2027-05-06 (-2d) | 38.39d → 39.23d |
| TAEXSTCU120003 | Install GRP Pipes & Fittings | 2027-05-08 → 2027-05-06 (-2d) | 2027-05-24 → 2027-05-23 (-1d) | 38.39d → 39.23d |
| TAEXSTCU120004 | Backfilling Works for Trench | 2027-05-26 → 2027-05-25 (-1d) | 2027-06-10 → 2027-06-09 (-1d) | 38.39d → 39.23d |
| TAEXSTCU120005 | Manhole Installation with backfilling | 2027-05-27 → 2027-05-26 (-1d) | 2027-06-10 → 2027-06-09 (-1d) | 38.39d → 39.23d |
| TAEXSTCU120006 | Install Catch Basin with UPVC Pipes & Fittings | 2027-06-14 → 2027-06-13 (-1d) | 2027-06-28 → 2027-06-27 (-1d) | 35.89d → 36.73d |
| TAEXSTCU120007 | Leakage Test | 2027-06-28 → 2027-06-27 (-1d) | 2027-07-03 → 2027-07-01 (-2d) | 35.89d → 36.73d |
| 11 | **Upgrade Local 14** |  | 2027-08-24 → 2027-08-29 (+5d) |  |
| 21 | **Electrical Works** |  | 2027-08-24 → 2027-08-17 (-7d) |  |
| TAEXELCU140001 | Trench Cut off |  | 2027-07-03 → 2027-06-26 (-7d) | -8.88d → -0.18d |
| TAEXELCU140005 | Cables Pulling |  | 2027-07-25 → 2027-07-18 (-7d) | 17.23d → 23.23d |
| TAEXELCU140004 | Trench Backfilling |  | 2027-07-21 → 2027-07-14 (-7d) | 17.23d → 23.23d |
| TAEXELCU140002 | Drawpit and PVC Pipes Installation | 2027-07-03 → 2027-06-26 (-7d) | 2027-07-10 → 2027-07-03 (-7d) | 9.17d → 15.17d |
| TAEXELCU140003 | Road Crossing Ducts | 2027-07-10 → 2027-07-03 (-7d) | 2027-07-13 → 2027-07-06 (-7d) | 17.23d → 23.23d |
| TAEXELCU140006 | Poles RC Foundation | 2027-07-10 → 2027-07-03 (-7d) | 2027-07-14 → 2027-07-07 (-7d) | 9.17d → 15.17d |
| TAEXELCU140008 | Lighting Pole Installation with Luminares | 2027-07-14 → 2027-07-07 (-7d) | 2027-07-21 → 2027-07-14 (-7d) | 9.17d → 15.17d |
| TAEXELCU140007 | Earthing cables | 2027-08-22 → 2027-08-15 (-7d) | 2027-08-24 → 2027-08-17 (-7d) | -6.39d → -0.23d |
| 22 | **CCTV Works** | 2027-07-10 → 2027-07-17 (+7d) | 2027-08-22 → 2027-08-29 (+7d) |  |
| TAEXCCCU140001 | Pipe Installation with manhole | 2027-07-10 → 2027-07-17 (+7d) | 2027-07-18 → 2027-07-25 (+7d) | -25.25d → -31.25d |
| TAEXCCCU140002 | CCTV Swiches Lighting panels Installation | 2027-07-18 → 2027-07-25 (+7d) | 2027-08-01 → 2027-08-08 (+7d) | -25.25d → -31.25d |
| TAEXCCCU140003 | Cable laying and connected with Panels | 2027-08-01 → 2027-08-08 (+7d) | 2027-08-10 → 2027-08-17 (+7d) | -8.25d → -14.25d |
| TAEXCCCU140004 | Pole Installation with IP Outdoor CCTV POE Camera | 2027-08-10 → 2027-08-17 (+7d) | 2027-08-22 → 2027-08-29 (+7d) | -8.25d → -14.25d |
| 12 | **Upgrade Local 18** | 2027-07-28 → 2027-08-04 (+7d) | 2027-08-31 → 2027-09-06 (+6d) |  |
| 27 | **CCTV Works** | 2027-07-28 → 2027-08-04 (+7d) | 2027-08-31 → 2027-09-06 (+6d) |  |
| TAEXCCCU180001 | Pipe Installation with manhole | 2027-07-28 → 2027-08-04 (+7d) | 2027-08-07 → 2027-08-14 (+7d) | -16.25d → -22.25d |
| TAEXCCCU180002 | CCTV Swiches Lighting panels Installation | 2027-08-07 → 2027-08-14 (+7d) | 2027-08-17 → 2027-08-24 (+7d) | -16.25d → -22.25d |
| TAEXCCCU180003 | Cable laying and connected with Panels | 2027-08-17 → 2027-08-24 (+7d) | 2027-08-25 → 2027-09-01 (+7d) | -16.25d → -22.25d |
| TAEXCCCU180004 | Pole Installation with IP Outdoor CCTV POE Camera | 2027-08-25 → 2027-09-01 (+7d) | 2027-08-31 → 2027-09-06 (+6d) | -16.25d → -22.25d |
| 13 | **Upgrade Local 20** |  | 2027-09-09 → 2027-09-16 (+7d) |  |
| 16 | **Electrical Works** |  | 2027-08-29 → 2027-08-22 (-7d) |  |
| TAEXELCU200001 | Trench Cut off |  | 2027-03-13 → 2027-03-11 (-2d) | -8.88d → -0.23d |
| TAEXELCU200005 | Cables Pulling |  | 2027-05-02 → 2027-05-01 (-1d) | 76.42d → 77.02d |
| TAEXELCU200004 | Trench Backfilling |  | 2027-05-01 → 2027-04-29 (-2d) | 76.42d → 77.02d |
| TAEXELCU200002 | Drawpit and PVC Pipes Installation |  | 2027-04-20 → 2027-04-19 (-1d) | 72.4d → 73d |
| TAEXELCU200003 | Road Crossing Ducts |  | 2027-04-24 → 2027-04-22 (-2d) | 76.42d → 77.02d |
| TAEXELCU200006 | Poles RC Foundation |  | 2027-04-28 → 2027-04-27 (-1d) | 72.4d → 73d |
| TAEXELCU200008 | Lighting Pole Installation with Luminares |  | 2027-05-09 → 2027-05-08 (-1d) | 72.4d → 73d |
| TAEXELCU200009 | Install Substation & RMU | 2027-05-02 → 2027-05-01 (-1d) | 2027-05-12 → 2027-05-11 (-1d) | 76.42d → 77.02d |
| TAEXELCU200007 | Earthing cables | 2027-08-24 → 2027-08-17 (-7d) | 2027-08-29 → 2027-08-22 (-7d) | -6.39d → -0.23d |
| 14 | **CCTV Works** | 2027-03-22 → 2027-03-29 (+7d) | 2027-09-09 → 2027-09-16 (+7d) |  |
| TAEXCCCU200001 | Pipe Installation with manhole | 2027-03-22 → 2027-03-29 (+7d) | 2027-04-03 → 2027-04-10 (+7d) | -25.25d → -31.25d |
| TAEXCCCU200002 | CCTV Swiches Lighting panels Installation | 2027-08-01 → 2027-08-08 (+7d) | 2027-08-16 → 2027-08-23 (+7d) | -25.25d → -31.25d |
| TAEXCCCU200003 | Cable laying and connected with Panels | 2027-08-16 → 2027-08-23 (+7d) | 2027-08-28 → 2027-09-03 (+6d) | -25.25d → -31.25d |
| TAEXCCCU200004 | Pole Installation with IP Outdoor CCTV POE Camera | 2027-08-28 → 2027-09-03 (+6d) | 2027-09-09 → 2027-09-16 (+7d) | -25.25d → -31.25d |
| 1 | **Potable Networks** | 2026-11-16 → 2026-11-23 (+7d) | 2027-01-30 → 2027-02-04 (+5d) |  |
| TAEXPTCU200007 | Valve Chamber works | 2026-11-16 → 2026-11-23 (+7d) | 2026-12-05 → 2026-12-12 (+7d) | 115.5d → 109.5d |
| TAEXPTCU200008 | Inspection Test | 2026-12-06 → 2026-12-13 (+7d) | 2026-12-10 → 2026-12-17 (+7d) | 203d → 197d |
| TAEXPTCU200001 | Excavation works for Trench | 2026-12-14 → 2026-12-19 (+5d) | 2026-12-23 → 2026-12-29 (+6d) | 75.5d → 70.9d |
| TAEXPTCU200002 | Bedding Works | 2026-12-24 → 2026-12-29 (+5d) | 2026-12-26 → 2026-12-31 (+5d) | 76.5d → 71.9d |
| TAEXPTCU200003 | Install Pipes & Fittings | 2026-12-27 → 2026-12-31 (+4d) | 2027-01-04 → 2027-01-10 (+6d) | 76.5d → 71.9d |
| TAEXPTCU200004 | Backfilling Works for Trench | 2027-01-05 → 2027-01-10 (+5d) | 2027-01-23 → 2027-01-28 (+5d) | 155d → 150.4d |

| ID | Task | Start | Finish | Complete | Total float |
| --- | --- | --- | --- | --- | --- |
| TAEXPTCU200005 | Install Valves with fittings | 2027-01-19 → 2027-01-24 (+5d) | 2027-01-23 → 2027-01-28 (+5d) |  | 155d → 150.4d |
| TAEXPTCU200006 | Install fire hydrent | 2027-01-24 → 2027-01-28 (+4d) | 2027-01-30 → 2027-02-04 (+5d) |  | 155d → 150.4d |
| 2 | **TSE Networks** | 2027-02-16 → 2027-01-18 (-29d) | 2027-05-06 → 2027-04-07 (-29d) |  |  |
| TAEXTSCU200001 | Excavation works for Trench | 2027-02-16 → 2027-01-18 (-29d) | 2027-03-11 → 2027-02-10 (-29d) |  | 70.7d → 96.1d |
| TAEXTSCU200002 | Bedding Works | 2027-03-11 → 2027-02-10 (-29d) | 2027-03-14 → 2027-02-13 (-29d) |  | 70.7d → 96.1d |
| TAEXTSCU200003 | Install Pipes & Fittings | 2027-03-14 → 2027-02-13 (-29d) | 2027-03-23 → 2027-02-22 (-29d) |  | 70.7d → 96.1d |
| TAEXTSCU200004 | Backfilling Works for Trench | 2027-03-23 → 2027-02-22 (-29d) | 2027-04-11 → 2027-03-13 (-29d) |  | 77.2d → 102.6d |
| TAEXTSCU200005 | Install Valves with fittings | 2027-04-06 → 2027-03-08 (-29d) | 2027-04-11 → 2027-03-13 (-29d) |  | 77.2d → 102.6d |
| TAEXTSCU200006 | Valve Chamber works | 2027-04-11 → 2027-03-13 (-29d) | 2027-05-01 → 2027-04-01 (-30d) |  | 77.2d → 102.6d |
| TAEXTSCU200007 | Inspection Test | 2027-05-01 → 2027-04-01 (-30d) | 2027-05-06 → 2027-04-07 (-29d) |  | 77.2d → 102.6d |
| 3 | **Sewerage Networks** | 2026-12-13 → 2026-12-20 (+7d) | 2027-02-20 → 2027-02-27 (+7d) |  |  |
| TAEXSWCU200001 | Excavation works for Trench | 2026-12-13 → 2026-12-20 (+7d) | 2026-12-30 → 2027-01-06 (+7d) |  | 134.5d → 128.5d |
| TAEXSWCU200002 | Bedding Works | 2026-12-30 → 2027-01-06 (+7d) | 2027-01-03 → 2027-01-10 (+7d) |  | 137.5d → 131.5d |
| TAEXSWCU200003 | Install GRP Pipes & Fittings | 2027-01-03 → 2027-01-10 (+7d) | 2027-01-17 → 2027-01-24 (+7d) |  | 137.5d → 131.5d |
| TAEXSWCU200004 | Backfilling Works for Trench | 2027-01-14 → 2027-01-21 (+7d) | 2027-02-03 → 2027-02-10 (+7d) |  | 137.5d → 131.5d |
| TAEXSWCU200005 | Manhole Installation with backfilling | 2027-01-27 → 2027-02-03 (+7d) | 2027-02-15 → 2027-02-22 (+7d) |  | 137.5d → 131.5d |
| TAEXSWCU200006 | Leakage Test | 2027-02-15 → 2027-02-22 (+7d) | 2027-02-20 → 2027-02-27 (+7d) |  | 137.5d → 131.5d |
| 14 | **Upgrade Local 29** |  | 2027-08-31 → 2027-08-24 (-7d) |  |  |
| 25 | **Road Works** |  | 2027-05-06 → 2027-05-12 (+6d) |  |  |
| TAEXRDCU290002 | MBC1 layer | 2027-02-21 → 2027-02-25 (+4d) | 2027-02-21 → 2027-02-27 (+6d) |  | 41d → 36.95d |
| TAEXRDCU290003 | BBC Base Course | 2027-02-22 → 2027-02-27 (+5d) | 2027-02-25 → 2027-03-03 (+6d) |  | 41d → 36.95d |
| TAEXRDCU290005 | Precast Concret Kerps | 2027-02-27 → 2027-03-03 (+4d) | 2027-03-09 → 2027-03-15 (+6d) |  | 41d → 36.95d |
| TAEXRDCU290004 | BWC Asphalt Wearing Course with RC | 2027-03-10 → 2027-03-15 (+5d) | 2027-03-13 → 2027-03-18 (+5d) |  | 75d → 70.95d |
| TAEXRDCU290006 | Precast Interlock Works | 2027-04-24 → 2027-04-28 (+4d) | 2027-05-02 → 2027-05-08 (+6d) |  | 75d → 70.95d |
| TAEXRDCU290007 | Stone Paving works | 2027-05-03 → 2027-05-08 (+5d) | 2027-05-04 → 2027-05-10 (+6d) |  | 75d → 70.95d |
| TAEXRDCU290008 | Road Marking | 2027-05-05 → 2027-05-10 (+5d) | 2027-05-05 → 2027-05-11 (+6d) |  | 75d → 70.95d |
| TAEXRDCU290009 | Traffic Sinage | 2027-05-06 → 2027-05-11 (+5d) | 2027-05-06 → 2027-05-12 (+6d) |  | 75d → 70.95d |
| 20 | **Electrical Works** | 2027-06-17 → 2027-06-10 (-7d) | 2027-08-31 → 2027-08-24 (-7d) |  |  |
| TAEXELCU290001 | Trench Cut off | 2027-06-17 → 2027-06-10 (-7d) | 2027-06-29 → 2027-06-22 (-7d) |  | -8.88d → -0.18d |
| TAEXELCU290002 | Drawpit and PVC Pipes Installation | 2027-06-29 → 2027-06-22 (-7d) | 2027-07-06 → 2027-06-29 (-7d) |  | 12.77d → 18.77d |
| TAEXELCU290003 | Road Crossing Ducts | 2027-07-06 → 2027-06-29 (-7d) | 2027-07-10 → 2027-07-03 (-7d) |  | 22.77d → 28.77d |
| TAEXELCU290006 | Poles RC Foundation | 2027-07-06 → 2027-06-29 (-7d) | 2027-07-11 → 2027-07-04 (-7d) |  | 12.77d → 18.77d |
| TAEXELCU290004 | Trench Backfilling | 2027-07-10 → 2027-07-03 (-7d) | 2027-07-21 → 2027-07-14 (-7d) |  | 22.77d → 28.77d |
| TAEXELCU290008 | Lighting Pole Installation with Luminares | 2027-07-11 → 2027-07-04 (-7d) | 2027-07-18 → 2027-07-11 (-7d) |  | 12.77d → 18.77d |
| TAEXELCU290005 | Cables Pulling | 2027-07-21 → 2027-07-14 (-7d) | 2027-07-26 → 2027-07-19 (-7d) |  | 22.77d → 28.77d |
| TAEXELCU290007 | Earthing cables | 2027-08-29 → 2027-08-22 (-7d) | 2027-08-31 → 2027-08-24 (-7d) |  | -6.39d → -0.23d |
| 1 | **Telecommunication Works** | 2027-06-29 → 2027-06-16 (-13d) | 2027-08-05 → 2027-07-25 (-11d) |  |  |
| TAEXTCCU290001 | Trench Cut off | 2027-06-29 → 2027-06-16 (-13d) | 2027-07-11 → 2027-06-28 (-13d) |  | -17.11d → -6.59d |
| TAEXTCCU290002 | Drawpit and PVC Pipes Installation | 2027-07-14 → 2027-07-03 (-11d) | 2027-07-21 → 2027-07-10 (-11d) |  | -20.11d → -10.77d |
| TAEXTCCU290003 | Road Crossing Ducts | 2027-07-21 → 2027-07-10 (-11d) | 2027-07-25 → 2027-07-13 (-12d) |  | -4.11d → 5.23d |
| TAEXTCCU290004 | Trench Backfilling | 2027-07-25 → 2027-07-13 (-12d) | 2027-08-05 → 2027-07-25 (-11d) |  | -4.11d → 5.23d |
| 21 | **CCTV Works** | 2027-07-01 → 2027-07-08 (+7d) | 2027-08-12 → 2027-08-19 (+7d) |  |  |
| TAEXCCCU290001 | Pipe Installation with manhole | 2027-07-01 → 2027-07-08 (+7d) | 2027-07-10 → 2027-07-17 (+7d) |  | -25.25d → -31.25d |
| TAEXCCCU290002 | CCTV Swiches Lighting panels Installation | 2027-07-10 → 2027-07-17 (+7d) | 2027-07-21 → 2027-07-28 (+7d) |  | -10.25d → -16.25d |
| TAEXCCCU290003 | Cable laying and connected with Panels | 2027-07-21 → 2027-07-28 (+7d) | 2027-08-01 → 2027-08-08 (+7d) |  | -0.25d → -6.25d |
| TAEXCCCU290004 | Pole Installation with IP Outdoor CCTV POE Camera | 2027-08-01 → 2027-08-08 (+7d) | 2027-08-12 → 2027-08-19 (+7d) |  | -0.25d → -6.25d |
| 2 | **Potable Networks** |  | 2027-05-20 → 2027-05-26 (+6d) |  |  |
| TAEXPTCU290007 | Valve Chamber works | 2027-05-03 → 2027-05-09 (+6d) | 2027-05-20 → 2027-05-26 (+6d) |  | 75.5d → 70.9d |
| 3 | **TSE Networks** |  | 2027-03-29 → 2027-02-28 (-29d) |  |  |
| TAEXTSCU290006 | Valve Chamber works | 2027-03-11 → 2027-02-10 (-29d) | 2027-03-29 → 2027-02-28 (-29d) |  | 110.2d → 135.6d |
| 15 | **Upgrade Local 32** |  | 2027-09-04 → 2027-08-29 (-6d) |  |  |
| 17 | **Electrical Works** | 2027-03-13 → 2026-11-22 (-111d) | 2027-09-04 → 2027-08-29 (-6d) |  |  |
| TAEXELCU320001 | Trench Cut off | 2027-03-13 → 2026-11-22 A (-111d) | 2027-03-25 → 2027-03-24 (-1d) | 0% → 5% | -8.88d → -0.23d |
| TAEXELCU320007 | Earthing cables | 2027-08-31 → 2027-08-24 (-7d) | 2027-09-04 → 2027-08-29 (-6d) |  | -6.39d → -0.23d |
| 4 | **Telecommunication Works** | 2027-04-03 → 2027-04-10 (+7d) | 2027-08-31 → 2027-08-19 (-12d) |  |  |
| TAEXCCCU320001 | Pipe Installation with manhole | 2027-04-03 → 2027-04-10 (+7d) | 2027-04-14 → 2027-04-21 (+7d) |  | -25.25d → -31.25d |
| TAEXCCCU320002 | CCTV Swiches Lighting panels Installation | 2027-07-21 → 2027-07-10 (-11d) | 2027-08-05 → 2027-07-25 (-11d) |  | -20.11d → -10.77d |
| TAEXCCCU320003 | Cable laying and connected with Panels | 2027-08-05 → 2027-07-25 (-11d) | 2027-08-17 → 2027-08-05 (-12d) |  | -16.11d → -6.77d |
| TAEXCCCU320004 | Pole Installation with IP Outdoor CCTV POE Camera | 2027-08-17 → 2027-08-05 (-12d) | 2027-08-31 → 2027-08-19 (-12d) |  | -16.11d → -6.77d |
| 16 | **Potable Networks** | 2026-12-06 → 2026-12-13 (+7d) | 2027-02-09 → 2027-02-15 (+6d) |  |  |
| TAEXPTCU320007 | Valve Chamber works | 2026-12-06 → 2026-12-13 (+7d) | 2026-12-24 → 2026-12-31 (+7d) |  | 115.5d → 109.5d |
| TAEXPTCU320001 | Excavation works for Trench | 2026-12-24 → 2026-12-29 (+5d) | 2027-01-03 → 2027-01-09 (+6d) |  | 75.5d → 70.9d |
| TAEXPTCU320008 | Inspection Test | 2026-12-26 → 2027-01-02 (+7d) | 2026-12-30 → 2027-01-06 (+7d) |  | 181d → 175d |
| TAEXPTCU320002 | Bedding Works | 2027-01-04 → 2027-01-09 (+5d) | 2027-01-05 → 2027-01-11 (+6d) |  | 75.5d → 70.9d |
| TAEXPTCU320003 | Install Pipes & Fittings | 2027-01-06 → 2027-01-11 (+5d) | 2027-01-14 → 2027-01-20 (+6d) |  | 75.5d → 70.9d |
| TAEXPTCU320004 | Backfilling Works for Trench | 2027-01-16 → 2027-01-20 (+4d) | 2027-02-02 → 2027-02-08 (+6d) |  | 75.5d → 70.9d |
| TAEXPTCU320005 | Install Valves with fittings | 2027-01-30 → 2027-02-03 (+4d) | 2027-02-02 → 2027-02-08 (+6d) |  | 75.5d → 70.9d |
| TAEXPTCU320006 | Install fire hydrent | 2027-02-03 → 2027-02-08 (+5d) | 2027-02-09 → 2027-02-15 (+6d) |  | 75.5d → 70.9d |
| 1 | **TSE Networks** |  | 2027-05-06 → 2027-04-07 (-29d) |  |  |
| TAEXTSCU320005 | Install Valves with fittings |  | 2027-04-11 → 2027-03-13 (-29d) |  | 77.2d → 102.6d |

| ID | Task | Start | Finish | Complete | Total float |
| --- | --- | --- | --- | --- | --- |
| TAEXTSCU320004 | Backfilling Works for Trench | 2027-03-23 → 2027-02-22 (-29d) | 2027-04-11 → 2027-03-13 (-29d) |  | 77.2d → 102.6d |
| TAEXTSCU320006 | Valve Chamber works | 2027-04-11 → 2027-03-13 (-29d) | 2027-05-01 → 2027-04-01 (-30d) |  | 77.2d → 102.6d |
| TAEXTSCU320007 | Inspection Test | 2027-05-01 → 2027-04-01 (-30d) | 2027-05-06 → 2027-04-07 (-29d) |  | 77.2d → 102.6d |
| 3 | **Storm Networks** | 2027-03-25 → 2027-03-24 (-1d) | 2027-06-07 → 2027-06-06 (-1d) |  |  |
| TAEXSTCU320001 | Excavation works for Trench | 2027-03-25 → 2027-03-24 (-1d) | 2027-04-06 → 2027-04-05 (-1d) |  | 35.89d → 36.73d |
| TAEXSTCU320002 | Bedding Works | 2027-04-06 → 2027-04-05 (-1d) | 2027-04-10 → 2027-04-08 (-2d) |  | 35.89d → 36.73d |
| TAEXSTCU320003 | Install GRP Pipes & Fittings | 2027-04-10 → 2027-04-08 (-2d) | 2027-04-17 → 2027-04-15 (-2d) |  | 35.89d → 36.73d |
| TAEXSTCU320004 | Backfilling Works for Trench | 2027-04-14 → 2027-04-13 (-1d) | 2027-05-04 → 2027-05-03 (-1d) |  | 35.89d → 36.73d |
| TAEXSTCU320005 | Manhole Installation with backfilling | 2027-04-27 → 2027-04-26 (-1d) | 2027-05-16 → 2027-05-15 (-1d) |  | 35.89d → 36.73d |
| TAEXSTCU320006 | Install Catch Basin with UPVC Pipes & Fittings | 2027-05-16 → 2027-05-15 (-1d) | 2027-06-02 → 2027-06-01 (-1d) |  | 35.89d → 36.73d |
| TAEXSTCU320007 | Leakage Test | 2027-06-02 → 2027-06-01 (-1d) | 2027-06-07 → 2027-06-06 (-1d) |  | 57.89d → 58.73d |
| 16 | **Upgrade Local 33** |  | 2027-09-06 → 2027-08-31 (-6d) |  |  |
| 27 | **Road Works** | 2027-05-05 → 2027-05-10 (+5d) | 2027-05-31 → 2027-06-06 (+6d) |  |  |
| TAEXRDCU330002 | Precast Concret Kerps | 2027-05-05 → 2027-05-10 (+5d) | 2027-05-16 → 2027-05-22 (+6d) |  | 54d → 49.95d |
| TAEXRDCU330001 | BWC Asphalt Wearing Course with RC | 2027-05-17 → 2027-05-22 (+5d) | 2027-05-17 → 2027-05-23 (+6d) |  | 54d → 49.95d |
| TAEXRDCU330003 | Precast Interlock Works | 2027-05-18 → 2027-05-23 (+5d) | 2027-05-26 → 2027-06-01 (+6d) |  | 54d → 49.95d |
| TAEXRDCU330004 | Stone Paving works | 2027-05-27 → 2027-06-01 (+5d) | 2027-05-29 → 2027-06-03 (+5d) |  | 54d → 49.95d |
| TAEXRDCU330005 | Road Marking | 2027-05-30 → 2027-06-03 (+4d) | 2027-05-30 → 2027-06-05 (+6d) |  | 54d → 49.95d |
| TAEXRDCU330006 | Traffic Sinage | 2027-05-31 → 2027-06-05 (+5d) | 2027-05-31 → 2027-06-06 (+6d) |  | 54d → 49.95d |
| 18 | **Electrical Works** | 2027-03-25 → 2027-03-24 (-1d) | 2027-09-06 → 2027-08-31 (-6d) |  |  |
| TAEXELCU330001 | Trench Cut off | 2027-03-25 → 2027-03-24 (-1d) | 2027-04-07 → 2027-04-06 (-1d) |  | -8.88d → -0.23d |
| TAEXELCU330007 | Earthing cables | 2027-09-04 → 2027-08-29 (-6d) | 2027-09-06 → 2027-08-31 (-6d) |  | -6.39d → -0.23d |
| 1 | **Telecommunication Works** | 2027-04-22 → 2027-04-13 (-9d) | 2027-08-24 → 2027-08-12 (-12d) |  |  |
| TAEXTCCU330001 | Trench Cut off | 2027-04-22 → 2027-04-13 (-9d) | 2027-04-28 → 2027-04-19 (-9d) |  | -20.11d → -9.59d |
| TAEXTCCU330002 | Drawpit and PVC Pipes Installation | 2027-08-05 → 2027-07-25 (-11d) | 2027-08-10 → 2027-07-29 (-12d) |  | -20.11d → -10.77d |
| TAEXTCCU330003 | Road Crossing Ducts | 2027-08-10 → 2027-07-29 (-12d) | 2027-08-14 → 2027-08-02 (-12d) |  | -20.11d → -10.77d |
| TAEXTCCU330004 | Trench Backfilling | 2027-08-14 → 2027-08-02 (-12d) | 2027-08-24 → 2027-08-12 (-12d) |  | -20.11d → -10.77d |
| 17 | **CCTV Works** | 2027-04-14 → 2027-04-21 (+7d) | 2027-08-24 → 2027-08-31 (+7d) |  |  |
| TAEXCCCU330001 | Pipe Installation with manhole | 2027-04-14 → 2027-04-21 (+7d) | 2027-04-24 → 2027-05-01 (+7d) |  | -25.25d → -31.25d |
| TAEXCCCU330002 | CCTV Swiches Lighting panels Installation | 2027-07-21 → 2027-07-28 (+7d) | 2027-08-02 → 2027-08-09 (+7d) |  | -10.25d → -16.25d |
| TAEXCCCU330003 | Cable laying and connected with Panels | 2027-08-02 → 2027-08-09 (+7d) | 2027-08-12 → 2027-08-19 (+7d) |  | -10.25d → -16.25d |
| TAEXCCCU330004 | Pole Installation with IP Outdoor CCTV POE Camera | 2027-08-12 → 2027-08-19 (+7d) | 2027-08-24 → 2027-08-31 (+7d) |  | -10.25d → -16.25d |
| 2 | **Potable Networks** |  | 2027-03-06 → 2027-03-11 (+5d) |  |  |
| TAEXPTCU330004 | Backfilling Works for Trench | 2027-01-16 → 2026-11-19 A (-58d) | 2027-01-28 → 2026-11-22 A (-67d) | 0% → 100% | 85.5d → none |
| TAEXPTCU330007 | Valve Chamber works | 2027-02-10 → 2027-02-15 (+5d) | 2027-03-06 → 2027-03-11 (+5d) |  | 75.5d → 70.9d |
| 3 | **TSE Networks** |  | 2027-04-17 → 2027-03-18 (-30d) |  |  |
| TAEXTSCU330004 | Backfilling Works for Trench |  | 2027-03-30 → 2027-03-01 (-29d) |  | 94.2d → 119.6d |
| TAEXTSCU330006 | Valve Chamber works | 2027-03-30 → 2027-03-01 (-29d) | 2027-04-17 → 2027-03-18 (-30d) |  | 94.2d → 119.6d |
| 5 | **Storm Networks** |  | 2027-06-14 → 2027-06-13 (-1d) |  |  |
| TAEXSTCU330004 | Backfilling Works for Trench |  | 2027-04-21 → 2027-04-17 (-4d) | 45% → 85% | 61.99d → 65.73d |
| TAEXSTCU330006 | Install Catch Basin with UPVC Pipes & Fittings | 2027-06-02 → 2027-06-01 (-1d) | 2027-06-14 → 2027-06-13 (-1d) |  | 35.89d → 36.73d |
| 17 | **Pond** |  | 2027-01-20 → 2027-01-27 (+7d) |  |  |
| 21 | **Storm Water Pond** |  | 2027-01-20 → 2027-01-27 (+7d) |  |  |
| TAEXSTCSWP0007 | Excavation works for ponds 7th part |  | 2026-11-25 → 2026-12-02 (+7d) |  | 195.15d → 189.15d |
| TAEXSTCSWP0009 | Riprap Works part 1 |  | 2026-11-26 → 2026-12-03 (+7d) |  | 194.4d → 188.4d |
| TAEXSTCSWP0012 | Outfall structure works |  | 2027-01-20 → 2027-01-27 (+7d) |  | 194.4d → 188.4d |
| TAEXSTCSWP0010 | Riprap Works Part 2 |  | 2026-11-30 → 2026-12-07 (+7d) |  | 194.4d → 188.4d |
| TAEXSTCSWP0011 | Sand Marl Mix Ballast layer | 2026-11-30 → 2026-12-07 (+7d) | 2026-12-14 → 2026-12-21 (+7d) |  | 194.4d → 188.4d |
| 22 | **CLOSE OUT** | 2027-02-06 → 2027-02-13 (+7d) | 2027-10-04 → 2027-10-11 (+7d) |  |  |
| 3 | **Final Testing and Commmisionning** | 2027-02-06 → 2027-02-13 (+7d) | 2027-09-30 → 2027-10-07 (+7d) |  |  |
| 1 | **Final Test & commisionning Zone 1** | 2027-02-21 → 2027-02-22 (+1d) | 2027-07-05 → 2027-07-12 (+7d) |  |  |
| TACOFTFT0007 | Sewerage Networks | 2027-02-21 → 2027-02-22 (+1d) | 2027-02-28 → 2027-03-01 (+1d) |  | 151.2d → 150.6d |
| TACOFTFT0008 | Storm Water Drainage Networks | 2027-02-21 → 2027-02-22 (+1d) | 2027-03-01 → 2027-03-02 (+1d) |  | 146.2d → 145.6d |
| TACOFTFT0006 | TSE Networks | 2027-03-23 → 2027-02-23 (-28d) | 2027-03-28 → 2027-02-28 (-28d) |  | 127.6d → 151.67d |
| TACOFTFT0005 | Potable Water Networks | 2027-04-08 → 2027-03-02 (-37d) | 2027-04-13 → 2027-03-07 (-37d) |  | 113.2d → 145.6d |
| TACOFTFT0004 | CCTV Networks | 2027-06-27 → 2027-07-04 (+7d) | 2027-07-05 → 2027-07-12 (+7d) |  | 42.75d → 36.75d |
| 2 | **Final Test & commisionning Zone 2** | 2027-02-06 → 2027-02-13 (+7d) | 2027-09-20 → 2027-09-27 (+7d) |  |  |
| TACOFTFT0015 | Sewerage Networks | 2027-02-06 → 2027-02-13 (+7d) | 2027-02-13 → 2027-02-20 (+7d) |  | 143.6d → 137.6d |
| TACOFTFT0016 | Storm Water Drainage Networks | 2027-03-15 → 2027-03-16 (+1d) | 2027-03-23 → 2027-03-24 (+1d) |  | 122.2d → 121.6d |
| TACOFTFT0014 | TSE Networks | 2027-03-20 → 2027-03-22 (+2d) | 2027-03-24 → 2027-03-27 (+3d) |  | 137.2d → 135.67d |
| TACOFTFT0013 | Potable Water Networks | 2027-04-04 → 2027-04-10 (+6d) | 2027-04-08 → 2027-04-14 (+6d) |  | 122.3d → 117.7d |
| TACOFTFT0011 | Telecommunications Networks | 2027-06-21 → 2027-06-17 (-4d) | 2027-06-29 → 2027-06-26 (-3d) |  | 27.83d → 30.43d |
| TACOFTFT0012 | CCTV Networks | 2027-09-12 → 2027-09-19 (+7d) | 2027-09-20 → 2027-09-27 (+7d) |  | -23.25d → -29.25d |
| 3 | **Final Test & commisionning Zone 3** | 2027-02-23 → 2027-03-02 (+7d) | 2027-09-30 → 2027-10-07 (+7d) |  |  |
| TACOFTFT0023 | Sewerage Networks | 2027-02-23 → 2027-03-02 (+7d) | 2027-03-01 → 2027-03-08 (+7d) |  | 134.5d → 128.5d |
| TACOFTFT0022 | TSE Networks | 2027-05-15 → 2027-05-02 (-13d) | 2027-05-18 → 2027-05-05 (-13d) |  | 93.7d → 104.9d |
| TACOFTFT0021 | Potable Water Networks | 2027-05-20 → 2027-05-26 (+6d) | 2027-05-26 → 2027-06-01 (+6d) |  | 86.5d → 81.9d |
| TACOFTFT0024 | Storm Water Drainage Networks | 2027-07-03 → 2027-07-01 (-2d) | 2027-07-11 → 2027-07-10 (-1d) |  | 35.89d → 36.73d |
| TACOFTFT0018 | Electrical NetWorks | 2027-08-11 → 2027-08-02 (-9d) | 2027-08-19 → 2027-08-10 (-9d) |  | -8.88d → -0.18d |
| TACOFTFT0017 | Road Works | 2027-08-04 → 2027-08-09 (+5d) | 2027-08-08 → 2027-08-12 (+4d) |  | -1.56d → -5.94d |

| ID | Task | Start | Finish | Total float |
| --- | --- | --- | --- | --- |
| TACOFTFT0019 | Telecommunications Networks | 2027-08-24 → 2027-08-12 (-12d) | 2027-09-01 → 2027-08-21 (-11d) | -20.11d → -10.77d |
| TACOFTFT0020 | CCTV Networks | 2027-09-20 → 2027-09-27 (+7d) | 2027-09-30 → 2027-10-07 (+7d) | -23.25d → -29.25d |
| 2 | **AS BUILT DRAWINGS** | 2027-02-23 → 2027-03-02 (+7d) | 2027-09-15 → 2027-09-22 (+7d) |  |
| 1 | **AS BUILT DRAWINGS Zone 1** | 2027-03-01 → 2027-03-08 (+7d) | 2027-09-15 → 2027-09-22 (+7d) |  |
| TACOFTAD0007 | Sewerage Networks | 2027-03-01 → 2027-03-08 (+7d) | 2027-03-13 → 2027-03-20 (+7d) | 134.5d → 128.5d |
| TACOFTAD0006 | TSE Networks | 2027-05-15 → 2027-05-02 (-13d) | 2027-05-26 → 2027-05-13 (-13d) | 70.7d → 81.9d |
| TACOFTAD0005 | Potable Water Networks | 2027-05-09 → 2027-05-15 (+6d) | 2027-05-20 → 2027-05-26 (+6d) | 75.5d → 70.9d |
| TACOFTAD0008 | Storm Water Drainage Networks | 2027-06-21 → 2027-06-20 (-1d) | 2027-07-03 → 2027-07-01 (-2d) | 38.89d → 39.73d |
| TACOFTAD0002 | Electrical NetWorks | 2027-08-19 → 2027-08-10 (-9d) | 2027-08-26 → 2027-08-17 (-9d) | -8.88d → -0.18d |
| TACOFTAD0001 | Road Works | 2027-08-08 → 2027-08-12 (+4d) | 2027-08-11 → 2027-08-16 (+5d) | -1.56d → -5.94d |
| TACOFTAD0003 | Telecommunications Networks | 2027-09-01 → 2027-08-21 (-11d) | 2027-09-08 → 2027-08-29 (-10d) | -20.11d → -10.77d |
| TACOFTAD0004 | CCTV Networks | 2027-09-11 → 2027-09-18 (+7d) | 2027-09-15 → 2027-09-22 (+7d) | -26.25d → -32.25d |
| 2 | **AS BUILT DRAWINGS Zone 2** | 2027-02-23 → 2027-03-02 (+7d) | 2027-09-15 → 2027-09-22 (+7d) |  |
| TACOFTAD0015 | Sewerage Networks | 2027-02-23 → 2027-03-02 (+7d) | 2027-03-13 → 2027-03-20 (+7d) | 134.5d → 128.5d |
| TACOFTAD0014 | TSE Networks | 2027-05-15 → 2027-05-02 (-13d) | 2027-05-26 → 2027-05-13 (-13d) | 70.7d → 81.9d |
| TACOFTAD0013 | Potable Water Networks | 2027-05-09 → 2027-05-15 (+6d) | 2027-05-20 → 2027-05-26 (+6d) | 75.5d → 70.9d |
| TACOFTAD0016 | Storm Water Drainage Networks | 2027-06-15 → 2027-06-14 (-1d) | 2027-07-03 → 2027-07-01 (-2d) | 38.89d → 39.73d |
| TACOFTAD0010 | Electrical NetWorks | 2027-08-18 → 2027-08-09 (-9d) | 2027-08-26 → 2027-08-17 (-9d) | -8.88d → -0.18d |
| TACOFTAD0009 | Road Works | 2027-08-11 → 2027-08-16 (+5d) | 2027-08-15 → 2027-08-19 (+4d) | -1.56d → -5.94d |
| TACOFTAD0011 | Telecommunications Networks | 2027-09-01 → 2027-08-21 (-11d) | 2027-09-08 → 2027-08-29 (-10d) | -20.11d → -10.77d |
| TACOFTAD0012 | CCTV Networks | 2027-09-11 → 2027-09-18 (+7d) | 2027-09-15 → 2027-09-22 (+7d) | -26.25d → -32.25d |
| 3 | **AS BUILT DRAWINGS Zone 3** | 2027-03-01 → 2027-03-08 (+7d) | 2027-09-15 → 2027-09-22 (+7d) |  |
| TACOFTAD0023 | Sewerage Networks | 2027-03-01 → 2027-03-08 (+7d) | 2027-03-13 → 2027-03-20 (+7d) | 134.5d → 128.5d |
| TACOFTAD0022 | TSE Networks | 2027-05-15 → 2027-05-02 (-13d) | 2027-05-26 → 2027-05-13 (-13d) | 70.7d → 81.9d |
| TACOFTAD0021 | Potable Water Networks | 2027-05-09 → 2027-05-15 (+6d) | 2027-05-20 → 2027-05-26 (+6d) | 75.5d → 70.9d |
| TACOFTAD0024 | Storm Water Drainage Networks | 2027-06-21 → 2027-06-20 (-1d) | 2027-07-03 → 2027-07-01 (-2d) | 38.89d → 39.73d |
| TACOFTAD0018 | Electrical NetWorks | 2027-08-18 → 2027-08-09 (-9d) | 2027-08-26 → 2027-08-17 (-9d) | -8.88d → -0.18d |
| TACOFTAD0017 | Road Works | 2027-08-15 → 2027-08-19 (+4d) | 2027-08-18 → 2027-08-23 (+5d) | -1.56d → -5.94d |
| TACOFTAD0019 | Telecommunications Networks | 2027-09-01 → 2027-08-21 (-11d) | 2027-09-08 → 2027-08-29 (-10d) | -20.11d → -10.77d |
| TACOFTAD0020 | CCTV Networks | 2027-09-09 → 2027-09-16 (+7d) | 2027-09-15 → 2027-09-22 (+7d) | -26.25d → -32.25d |
| 1 | **DEMOBILIZATION** | 2027-09-15 → 2027-09-22 (+7d) | 2027-10-04 → 2027-10-11 (+7d) |  |
| TAPCDZ00000001 | Demobilization Manpower | 2027-09-15 → 2027-09-22 (+7d) | 2027-09-22 → 2027-09-29 (+7d) | -26.25d → -32.25d |
| TAPCDZ00000002 | Remove Offices and Structures | 2027-09-22 → 2027-09-29 (+7d) | 2027-09-28 → 2027-10-05 (+7d) | -26.25d → -32.25d |
| TAPCDZ00000022 | Restore Ground Surfaces | 2027-09-27 → 2027-10-04 (+7d) | 2027-10-04 → 2027-10-11 (+7d) | -26.25d → -32.25d |
| TAPCDZ00000012 | Demobilize Equipment from Site | 2027-09-28 → 2027-10-05 (+7d) | 2027-10-04 → 2027-10-11 (+7d) | -26.25d → -32.25d |
| TAPCDZ00000032 | Final Handover | 2027-10-04 → 2027-10-11 (+7d) | 2027-10-04 → 2027-10-11 (+7d) | -26.25d → -32.25d |
