# Modon Revised Schedule 01-Oct-26

How a schedule from Primavera P6 changed from version to version. A marks actual dates.

## Version 1 (data date 2026-10-03, saved 2026-10-06, file Revised DAM3-02-008-WPR.56- 10-01-2026 XER.xer)

| ID | WBS | Task | Duration | Start | Finish | Predecessors | Complete | Total float | Constraint |
| --- | --- | --- | --- | --- | --- | --- | --- | --- | --- |
|  | 7 | **Part 02** |  | 2025-05-19 | 2027-06-25 |  |  |  |  |
|  | 1 | **MileStones** |  | 2025-05-19 | 2027-06-25 |  |  |  |  |
| A1850 |  | Project Start | 0d | 2025-05-19 A | 2025-05-19 A |  | 100% |  | start on 2025-05-19 |
| A2350 |  | T&C Finish Date | 0d | 2027-04-03 | 2027-04-03 | A2340, A2230, A2360, A2370 |  | -23.3d | finish on or before 2027-03-07 |
| A1860 |  | Revised Scope Finish date | 0d | 2027-04-15 | 2027-04-15 | A1060, A1020, A1240, A1230, A1280, A1310, A1370, A1360, A1400, A1840, A1730, A1700, A1620, A1510, A1940, A1960, A2160, A2260, A1080, A1070 |  | -61.4d | finish on or before 2027-02-12 |
| A1870 |  | Saving Scope Finish date | 0d | 2027-06-25 | 2027-06-25 | A2330, A2320 |  | -36.92d | finish on or before 2027-05-20 |
| A1880 |  | Project Finish | 0d | 2027-06-25 | 2027-06-25 | A1060, A1870, A2340, A2350, A1860 |  | -36.92d | finish on or before 2027-05-20 |
|  | 2 | **Revised Scope** |  | 2025-05-19 | 2027-04-15 |  |  |  |  |
|  | 7 | **Storm Network** |  | 2026-01-03 | 2027-03-30 |  |  |  |  |
| A2000 |  | Bedding | 250d | 2026-01-03 A | 2027-03-30 | A1390 SS, A1390 FF | 79% | 50.38d |  |
| A1920 |  | GRP Pipes | 150d | 2026-01-31 A | 2026-11-03 | A2000 SS+30d | 79% | 197.19d |  |
| A1910 |  | UPVC | 110d | 2026-06-30 A | 2026-11-09 | A1920 | 66% | 191.6d |  |
| A2020 |  | Beeding Open UPVC drainage pipes | 140d | 2026-06-30 A | 2026-10-05 | A1910 SS | 98% | 226.48d |  |
| A2010 |  | Open UPVC drainage pipes | 140d | 2026-07-01 A | 2026-11-01 | A2020 SS+2d, A2020 FF | 79% | 199.6d |  |
| A1990 |  | Drinage Champer | 110d | 2026-07-05 A | 2026-11-02 | A1910 SS+5d | 73% | 198.86d |  |
| A1970 |  | Catch Basins | 110d | 2026-07-09 A | 2026-10-29 | A1990 SS+5d | 76% | 202.27d |  |
| A2030 |  | Geotextile | 140d | 2026-07-11 A | 2026-10-05 | A2010 SS+10d | 98% | 226.48d |  |
| A1980 |  | Swales | 140d | 2026-07-13 A | 2026-11-15 | A2030 SS+2d | 69% | 185.6d |  |
| A1960 |  | Gully outfalls | 110d | 2026-07-14 A | 2026-10-29 | A1970 SS+5d | 76% | 106.16d |  |
| A1950 |  | Manhoule | 160d | 2026-07-15 A | 2027-03-05 | A2040 SS | 4% | 75.4d |  |
| A2040 |  | Collection sump | 160d | 2026-07-15 A | 2026-11-24 | A1980 SS+2d | 67% | 176.2d |  |
| A1930 |  | Box Culvert | 160d | 2026-07-18 A | 2027-03-04 | A1950 SS+3d | 4% | -27.25d |  |
| A1940 |  | Pipes Culvert | 113d | 2026-10-03 | 2027-01-23 | A1930 SS+4d |  | -27.25d |  |
|  | 8 | **Ponds** |  | 2025-05-19 | 2027-01-16 |  |  |  |  |
| A2050 |  | Clearnce | 63d | 2025-05-19 A | 2026-07-20 A | A1850 | 100% |  |  |
| A2380 |  | Riprap | 444d | 2025-07-11 A | 2026-11-19 | A1850 | 89% | 45.58d |  |
| A2110 |  | blinding & Walls Concerete | 60d | 2025-07-21 A | 2026-10-06 | A2050 | 94% | 225.6d |  |
| A2120 |  | RAFT Concerete | 60d | 2025-09-19 A | 2026-10-05 | A2110 | 96% | 226.59d |  |
| A2130 |  | Backfilling | 60d | 2025-11-25 A | 2026-11-25 | A2120 | 10% | 175d |  |
| A2140 |  | Power Floating | 60d | 2026-01-17 A | 2026-11-11 | A2130 | 34% | 189.4d |  |
| A2100 |  | Siphon pipework | 60d | 2026-03-18 A | 2026-10-07 | A2140 | 92% | 224.2d |  |
| A2060 |  | Excavation | 120d | 2026-05-26 A | 2026-10-15 | A2080 SS+10d | 89% | 216.24d |  |
| A2090 |  | HDPE geomembrane waterproofing | 120d | 2026-05-26 A | 2026-11-06 | A2080 SS+10d | 71% | 194.2d |  |
| A2150 |  | Perimeter waterproof | 120d | 2026-06-04 A | 2026-10-22 | A2090 SS+10d | 84% | 73.8d |  |
| A2070 |  | Disposal Material | 120d | 2026-06-23 A | 2026-10-05 | A2060 SS+30d | 98% | -3d |  |
| A2080 |  | Filter | 60d | 2026-07-11 A | 2026-10-09 | A2100 | 89% | 222.59d |  |
| A2160 |  | Entrance Rood | 40d | 2026-12-08 | 2027-01-16 | A2070, A2150, A2170, A2380 |  | 27d |  |
|  | 6 | **Sewage Network** |  | 2025-12-24 | 2027-03-30 |  |  |  |  |
| A1390 |  | Bedding | 260d | 2025-12-24 A | 2027-03-30 | A1150 SS+1d | 32% | 50.38d |  |
| A1320 |  | UPVC Pipes | 320d | 2025-12-29 A | 2027-02-27 | A1330 SS | 54% | 81.8d |  |
| A1330 |  | GRP Pipes | 320d | 2025-12-29 A | 2027-01-13 | A1390 SS+5d | 68% | 126.6d |  |
| A1340 |  | HDPE Pipes | 320d | 2025-12-29 A | 2026-12-09 | A1320 SS | 79% | 161.8d |  |
| A1350 |  | HDPE Fitting | 320d | 2026-01-03 A | 2027-03-02 | A1340 SS+5d | 53% | 78.6d |  |
| A1380 |  | Manhoule | 200d | 2026-04-20 A | 2027-01-26 | A1330 SS+120d | 45% | 113d |  |
| A1370 |  | Valve Champer | 38d | 2026-07-30 A | 2026-11-05 | A1380 | 22% | 99.94d |  |
| A1400 |  | Thurst Block | 30d | 2026-07-30 A | 2026-10-28 | A1350 | 16% | 25.55d |  |
| A1360 |  | Valves | 30d | 2026-10-03 | 2026-11-01 | A1400 SS |  | 103d |  |
|  | 1 | **Pump Station (PS01)** |  | 2026-05-16 | 2026-12-04 |  |  |  |  |
| A1470 |  | MCC Buildingn ( Civil Work ) | 60d | 2026-05-16 A | 2026-08-16 A | A1560 | 100% |  |  |
| A1450 |  | Fual System Tank | 25d | 2026-07-30 A | 2026-10-25 | A1460 | 9% | 166.25d |  |
| A1480 |  | Light Poles | 15d | 2026-07-30 A | 2026-08-19 A | A1430, A1420, A1500 | 100% |  |  |
| A1420 |  | Odor System | 60d | 2026-10-03 | 2026-12-01 | A1470 |  | 169d |  |
| A1460 |  | Concrete Element Works | 60d | 2026-10-03 | 2026-12-01 | A1470 |  | 169d |  |
| A1510 |  | Interlock Paving | 13d | 2026-10-03 | 2026-10-15 | A1480 |  | 37.75d |  |
| A1440 |  | Raked bar SS 316 (35 mm) | 15d | 2026-10-25 | 2026-11-09 | A1450 |  | 166.25d |  |
| A1490 |  | UPVC Ducts | 15d | 2026-10-25 | 2026-11-09 | A1450 |  | 176.25d |  |
| A1410 |  | Pumps | 15d | 2026-11-09 | 2026-11-24 | A1440 |  | 166.25d |  |
| A1500 |  | Earthing | 15d | 2026-11-09 | 2026-11-24 | A1490 |  | 176.25d |  |
| A1430 |  | In-line Booste Station | 10d | 2026-11-24 | 2026-12-04 | A1410 |  | 166.25d |  |
|  | 2 | **Pump Station (PS02)** |  | 2026-03-17 | 2026-12-16 |  |  |  |  |
| A1560 |  | Entrance Gate | 60d | 2026-03-17 A | 2026-06-11 A | A1570 SS, A1090 SS+90d | 100% |  |  |
| A1570 |  | Concrete Element Works | 60d | 2026-03-17 A | 2026-11-13 | A1090 SS+90d | 30% | 187.06d |  |
| A1580 |  | MCC Buildingn ( Civil Work ) | 60d | 2026-06-13 A | 2026-08-16 A | A1570, A1560 FS+30d | 100% |  |  |
| A1590 |  | Light Poles | 23d | 2026-07-30 A | 2026-08-19 A | A1540 SS | 100% |  |  |
| A1540 |  | In-line Booste Station | 25d | 2026-07-31 A | 2026-10-26 | A1520, A1530 | 6% | 205.38d |  |
| A1530 |  | Odor System | 60d | 2026-09-01 A | 2026-11-01 | A1580 | 50% | 199d |  |
| A1600 |  | UPVC Ducts | 30d | 2026-10-03 | 2026-11-01 | A1580 |  | 154d |  |
| A1620 |  | Interlock Paving | 25d | 2026-10-09 | 2026-11-03 | A1590, A1550 |  | 19.23d |  |
| A1610 |  | Earthing | 30d | 2026-11-02 | 2026-12-01 | A1600 |  | 154d |  |
| A1520 |  | Pumps | 15d | 2026-12-02 | 2026-12-16 | A1610 |  | 154d |  |

| ID | WBS | Task | Duration | Start | Finish | Predecessors | Complete | Total float | Constraint |
| --- | --- | --- | --- | --- | --- | --- | --- | --- | --- |
| A1550 |  | Valves | 15d | 2027-08-25 A | 2026-10-09 | A1520 | 56% | 19.23d |  |
|  | 3 | **Pump Station (PS03)** |  | 2026-05-19 | 2026-12-01 |  |  |  |  |
| A1690 |  | MCC Buildingn ( Civil Work ) | 50d | 2026-05-19 A | 2026-08-16 A | A1560 | 100% |  |  |
| A1680 |  | Concrete Element Works | 60d | 2026-07-05 A | 2026-11-05 | A1690 | 45% | 169d |  |
| A1650 |  | In-line Booste Station | 20d | 2026-07-30 A | 2026-10-21 | A1630 | 6% | 18.85d |  |
| A1700 |  | Light Poles | 10d | 2026-07-30 A | 2026-08-20 A | A1650, A1660 | 100% |  |  |
| A1640 |  | Odor System | 20d | 2026-08-30 A | 2026-10-12 | A1670 | 50% | 169d |  |
| A1670 |  | Entrance Gates | 60d | 2026-10-03 | 2026-12-01 | A1680 SS |  | 169d |  |
| A1710 |  | UPVC Ducts | 20d | 2026-10-13 | 2026-11-01 | A1640 |  | 169d |  |
| A1730 |  | Interlock Paving | 13d | 2026-10-21 | 2026-11-03 | A1650 |  | 18.85d |  |
| A1720 |  | Earthing | 15d | 2026-11-02 | 2026-11-16 | A1710 |  | 169d |  |
| A1630 |  | Pumps | 15d | 2026-11-17 | 2026-12-01 | A1720 |  | 169d |  |
| A1660 |  | Valves | 15d | 2027-08-23 A | 2026-10-09 | A1630 | 57% | 222.49d |  |
|  | 4 | **Pump Station (PS04)** |  | 2026-04-14 | 2026-12-14 |  |  |  |  |
| A1900 |  | Entrance Gates | 30d | 2026-04-14 A | 2026-08-22 A | A1560 SS+30d | 100% |  |  |
| A1800 |  | MCC Buildingn ( Civil Work ) | 60d | 2026-05-17 A | 2026-10-03 | A1900 SS+35d | 99% | 198.64d |  |
| A1810 |  | Light Poles | 10d | 2026-07-30 A | 2026-08-25 A | A1760, A1830 | 100% |  |  |
| A1890 |  | Fual System Tank | 30d | 2026-07-30 A | 2026-10-30 | A1790 | 9% | 161.7d |  |
| A1750 |  | Odor System | 45d | 2026-08-23 A | 2026-10-25 | A1800 | 50% | 196.5d |  |
| A1770 |  | Valves | 10d | 2026-08-26 A | 2026-10-08 | A1740 | 46% | 32.39d |  |
| A1840 |  | Interlock Paving | 13d | 2026-10-08 | 2026-10-21 | A1810, A1770 |  | 32.39d |  |
| A1790 |  | Concrete Element Works | 60d | 2026-10-16 | 2026-12-14 | A1900 FS+60d |  | 156d |  |
| A1780 |  | Raked bar SS 316 (35 mm) | 15d | 2026-10-30 | 2026-11-14 | A1890 |  | 161.7d |  |
| A1820 |  | UPVC Ducts | 15d | 2026-10-30 | 2026-11-14 | A1800, A1890 |  | 171.7d |  |
| A1740 |  | Pumps | 15d | 2026-11-14 | 2026-11-29 | A1780 |  | 161.7d |  |
| A1830 |  | Earthing | 15d | 2026-11-14 | 2026-11-29 | A1820 |  | 171.7d |  |
| A1760 |  | In-line Booste Station | 10d | 2026-11-29 | 2026-12-09 | A1750, A1740 |  | 161.7d |  |
|  | 4 | **Potable Water Network** |  | 2025-12-23 | 2027-02-13 |  |  |  |  |
| A1150 |  | Sand Bedding & Covr | 220d | 2025-12-23 A | 2026-10-12 | A1090 SS | 96% | 219.76d |  |
| A1100 |  | HDPE Pipes | 250d | 2025-12-24 A | 2026-11-05 | A1150 SS+1d | 87% | 95.67d |  |
| A1210 |  | Water Tank | 200d | 2026-02-12 A | 2026-11-05 | A1100 SS+48d, A1100 FF | 84% | 95.67d |  |
| A1110 |  | HDPE Fitting | 150d | 2026-04-15 A | 2026-12-04 | A1100 SS+120d | 58% | 166.3d |  |
| A1160 |  | Thrust Block | 90d | 2026-06-11 A | 2026-11-12 | A1110 SS+62d | 55% | 188.31d |  |
| A1220 |  | Generator | 149d | 2026-06-14 A | 2027-02-13 | A1210 SS+130d | 11% | 95.65d |  |
| A1120 |  | Valves | 165d | 2026-06-16 A | 2026-12-06 | A1160 SS+5d | 61% | 164.65d |  |
| A1130 |  | Fire Hydrant | 30d | 2026-07-13 A | 2026-10-11 | A1110 | 70% | 220d | start on or after 2026-09-12 |
| A1240 |  | Street Lighting | 112d | 2026-07-30 A | 2026-12-12 | A1210 | 37% | 62.72d |  |
| A1140 |  | Valve Champer | 15d | 2026-08-03 A | 2026-10-14 | A1130 | 24% | 31.57d |  |
| A1230 |  | Coloration System | 23d | 2026-08-10 A | 2026-10-08 | A1190, A1120, A1220 | 75% | 50.75d |  |
| A1200 |  | Pump Building | 60d | 2026-11-05 | 2027-01-04 | A1210 |  | 95.67d |  |
| A1170 |  | Fire Fighting Pump | 10d | 2027-01-04 | 2027-01-14 | A1200, A1140 |  | 95.67d |  |
| A1180 |  | Surge vessel Fual System Tank | 20d | 2027-01-14 | 2027-02-03 | A1170 |  | 95.67d |  |
| A1190 |  | Surge vessel Valve | 10d | 2027-02-03 | 2027-02-13 | A1180 |  | 95.67d |  |
|  | 5 | **Irrigation Network** |  | 2026-02-12 | 2027-02-01 |  |  |  |  |
| A1300 |  | Bedding | 170d | 2026-02-12 A | 2026-10-16 | A1210 SS | 92% | 215.4d |  |
| A1250 |  | HDPE Pipes | 210d | 2026-02-22 A | 2026-10-28 | A1300 SS+10d | 88% | 203.38d |  |
| A1260 |  | HDPE Fitting | 210d | 2026-03-03 A | 2027-01-03 | A1250 SS+10d | 56% | 136.6d |  |
| A1270 |  | Valves | 200d | 2026-04-28 A | 2026-11-23 | A1260 SS+60d | 74% | 177d |  |
| A1290 |  | Flow meter Valves | 200d | 2026-05-07 A | 2027-02-01 | A1270 SS+10d | 39% | 107.2d |  |
| A1280 |  | Valve Champer | 140d | 2026-06-04 A | 2026-11-16 | A1290 SS+30d | 68% | 88.2d |  |
| A1310 |  | Thrust Block | 160d | 2026-06-18 A | 2026-12-18 | A1290 SS+45d | 52% | -27.03d |  |
|  | 9 | **Road Crossing** |  | 2026-03-18 | 2026-12-07 |  |  |  |  |
| A2170 |  | Rood Crossing UPVC Selves | 160d | 2026-03-18 A | 2026-12-07 | A2140 | 59% | 27d |  |
|  | 2 | **Road Works** |  | 2026-10-31 | 2027-01-28 |  |  |  |  |
| A1030 |  | MC1 | 20d | 2026-10-31 | 2026-11-19 | A1140 |  | 15d | start on or after 2026-10-31 |
| A1040 |  | Binder Course | 20d | 2026-11-20 | 2026-12-09 | A1030 |  | 15d |  |
| A1050 |  | Wearing Couse | 20d | 2026-12-10 | 2026-12-29 | A1040 |  | 15d |  |
| A1060 |  | Pre-Cast Cerb | 30d | 2026-12-30 | 2027-01-28 | A1050 |  | 15d |  |
|  | 1 | **Hard Scape ( Curbstone )** |  | 2026-08-06 | 2027-01-17 |  |  |  |  |
| A1020 |  | Pre-Cast Cerb | 120d | 2026-08-06 A | 2027-01-17 | A1300 SS+60d | 12% | 26.92d |  |
|  | 10 | **Secondary Irrigation Network** |  | 2026-11-08 | 2027-01-18 |  |  |  |  |
| A2240 |  | Clean Sand | 15.93d | 2026-11-08 | 2026-11-23 | A2070 |  | -36.92d | start on or after 2026-11-08 |
| A2220 |  | Gravel 150 mm | 10d | 2026-11-23 | 2026-12-03 | A2240 |  | -36.92d |  |
| A2250 |  | Irrigation System | 15d | 2026-12-03 | 2026-12-18 | A2220 |  | -36.92d |  |
| A2180 |  | Phoenix Dactylifera | 15d | 2026-12-18 | 2027-01-02 | A2250 |  | -36.92d |  |
| A2190 |  | Shrubs and Vines, | 15d | 2026-12-18 | 2027-01-02 | A2210 SS |  | -36.92d |  |
| A2200 |  | Peltophorum Inerme | 15d | 2026-12-18 | 2027-01-02 | A2180 SS |  | -36.92d |  |
| A2210 |  | Atriplex canescens | 15d | 2026-12-18 | 2027-01-02 | A2200 SS |  | -36.92d |  |
| A2260 |  | Maintance | 16d | 2027-01-02 | 2027-01-18 | A2190 |  | -36.92d |  |
|  | 3 | **Telecom** |  | 2025-12-23 | 2027-04-15 |  |  |  |  |

| ID | WBS | Task | Duration | Start | Finish | Predecessors | Complete | Total float |
| --- | --- | --- | --- | --- | --- | --- | --- | --- |
| A1090 |  | Manhole | 220d | 2025-12-23 A | 2026-10-13 | A1850 | 95% | 218.51d |
| A1070 |  | Duct Bank | 360d | 2026-02-17 A | 2027-04-15 | A1090 SS | 46% | -61.4d |
| A1080 |  | Road Crossing | 361d | 2026-02-17 A | 2026-11-11 | A1070 SS | 89% | 93.29d |
|  | 12 | **Testing & Comissioning** |  | 2026-10-03 | 2027-04-03 |  |  |  |
| A2230 |  | Potable Water T&C | 90d | 2026-10-03 | 2027-01-14 | A1230 SS |  | 43.7d |
| A2360 |  | Seweage Testing & Comissiong | 90d | 2026-11-03 | 2027-02-16 | A1840, A1730, A1620, A1510, A1400 |  | 15.88d |
| A2340 |  | Lateral Irrigation Network T&C | 91d | 2026-12-19 | 2027-04-03 | A1310 |  | -23.3d |
| A2370 |  | Drainage Network T&C | 60d | 2027-01-23 | 2027-04-03 | A1940 |  | -23.2d |
|  | 3 | **Saving Scope** |  | 2027-01-18 | 2027-06-25 |  |  |  |
|  | 11 | **General Works** |  | 2027-01-18 | 2027-02-17 |  |  |  |
| A2280 |  | Saving Works | 30d | 2027-01-18 | 2027-02-17 | A2260 |  | -36.92d |
|  | 1 | **Local Road** |  | 2027-02-17 | 2027-03-04 |  |  |  |
| A2290 |  | Saving Works | 15d | 2027-02-17 | 2027-03-04 | A2280 |  | -36.92d |
|  | 5 | **Lateral Irrigation Network** |  | 2027-03-04 | 2027-04-18 |  |  |  |
| A2300 |  | Saving Works | 45d | 2027-03-04 | 2027-04-18 | A2290 |  | -36.92d |
|  | 7 | **Drainage Network** |  | 2027-04-18 | 2027-06-06 |  |  |  |
| A2310 |  | Saving Works | 49d | 2027-04-18 | 2027-06-06 | A2300 |  | -36.92d |
|  | 8 | **Pounds** |  | 2027-04-18 | 2027-06-25 |  |  |  |
| A2320 |  | Saving Works | 68d | 2027-04-18 | 2027-06-25 | A2310 SS, A2310 FF |  | -36.92d |
|  | 9 | **Road Crossing** |  | 2027-04-18 | 2027-06-25 |  |  |  |
| A2330 |  | Saving Works | 68d | 2027-04-18 | 2027-06-25 | A2300 |  | -36.92d |

## Version 2 (data date 2026-10-24, saved 2026-10-27, file MDD-Revised Update-10-27-2026.xer)

Last finish 2027-06-25 → 2027-06-12 (-13d).

Changed:

| ID | Task | Start | Finish | Complete | Total float |
| --- | --- | --- | --- | --- | --- |
| 7 | **Part 02** |  | 2027-06-25 → 2027-06-12 (-13d) |  |  |
| 1 | **MileStones** |  | 2027-06-25 → 2027-06-12 (-13d) |  |  |
| A2350 | T&C Finish Date | 2027-04-03 → 2027-04-24 (+21d) | 2027-04-03 → 2027-04-24 (+21d) |  | -23.3d → -41.3d |
| A1860 | Revised Scope Finish date | 2027-04-15 → 2027-05-06 (+21d) | 2027-04-15 → 2027-05-06 (+21d) |  | -61.4d → -82.4d |
| A1870 | Saving Scope Finish date | 2027-06-25 → 2027-06-12 (-13d) | 2027-06-25 → 2027-06-12 (-13d) |  | -36.92d → -24d |
| A1880 | Project Finish | 2027-06-25 → 2027-06-12 (-13d) | 2027-06-25 → 2027-06-12 (-13d) |  | -36.92d → -24d |
| 2 | **Revised Scope** |  | 2027-04-15 → 2027-05-06 (+21d) |  |  |
| 7 | **Storm Network** |  | 2027-03-30 → 2027-04-18 (+19d) |  |  |
| A2000 | Bedding |  | 2027-03-30 → 2027-04-18 (+19d) |  | 50.38d → 31.2d |
| A1920 | GRP Pipes |  | 2026-11-03 → 2026-11-24 (+21d) |  | 197.19d → 176.19d |
| A1910 | UPVC |  | 2026-11-09 → 2026-11-30 (+21d) |  | 191.6d → 170.6d |
| A2020 | Beeding Open UPVC drainage pipes |  | 2026-10-05 → 2026-10-26 (+21d) |  | 226.48d → 205.48d |
| A2010 | Open UPVC drainage pipes |  | 2026-11-01 → 2026-11-22 (+21d) |  | 199.6d → 178.6d |
| A1990 | Drinage Champer |  | 2026-11-02 → 2026-11-18 (+16d) | 73% → 76% | 198.86d → 182.1d |
| A1970 | Catch Basins |  | 2026-10-29 → 2026-11-10 (+12d) | 76% → 84% | 202.27d → 190.95d |
| A2030 | Geotextile |  | 2026-10-05 → 2026-10-26 (+21d) |  | 226.48d → 205.48d |
| A1980 | Swales |  | 2026-11-15 → 2026-12-06 (+21d) |  | 185.6d → 164.6d |
| A1960 | Gully outfalls |  | 2026-10-29 → 2026-11-10 (+12d) | 76% → 84% | 106.16d → 94.42d |
| A1950 | Manhoule |  | 2027-03-05 → 2027-03-26 (+21d) |  | 75.4d → 54.4d |
| A2040 | Collection sump |  | 2026-11-24 → 2026-12-14 (+20d) | 67% → 68% | 176.2d → 156.14d |
| A1930 | Box Culvert |  | 2027-03-04 → 2027-03-25 (+21d) |  | -27.25d → -48.25d |
| A1940 | Pipes Culvert | 2026-10-03 → 2026-10-24 (+21d) | 2027-01-23 → 2027-02-13 (+21d) |  | -27.25d → -48.25d |
| 8 | **Ponds** |  | 2027-01-16 → 2027-02-06 (+21d) |  |  |
| A2380 | Riprap |  | 2026-11-19 → 2026-12-10 (+21d) |  | 45.58d → 24.58d |
| A2110 | blinding & Walls Concerete |  | 2026-10-06 → 2026-10-26 (+20d) | 94% → 95% | 225.6d → 205d |
| A2120 | RAFT Concerete |  | 2026-10-05 → 2026-10-26 (+21d) |  | 226.59d → 205.59d |
| A2130 | Backfilling |  | 2026-11-25 → 2026-11-08 (-17d) | 10% → 73% | 175d → 192.06d |
| A2140 | Power Floating |  | 2026-11-11 → 2026-12-02 (+21d) |  | 189.4d → 168.4d |
| A2100 | Siphon pipework |  | 2026-10-07 → 2026-10-28 (+21d) |  | 224.2d → 203.2d |
| A2060 | Excavation |  | 2026-10-15 → 2026-11-03 (+19d) | 89% → 92% | 216.24d → 197.8d |
| A2090 | HDPE geomembrane waterproofing |  | 2026-11-06 → 2026-11-17 (+11d) | 71% → 79% | 194.2d → 183.28d |
| A2150 | Perimeter waterproof |  | 2026-10-22 → 2026-11-12 (+21d) |  | 73.8d → 52.8d |
| A2070 | Disposal Material |  | 2026-10-05 → 2026-10-26 (+21d) |  | -3d → -24d |
| A2080 | Filter |  | 2026-10-09 → 2026-10-30 (+21d) |  | 222.59d → 201.59d |
| A2160 | Entrance Rood | 2026-12-08 → 2026-12-29 (+21d) | 2027-01-16 → 2027-02-06 (+21d) |  | 27d → 6d |
| 6 | **Sewage Network** |  | 2027-03-30 → 2027-04-18 (+19d) |  |  |
| A1390 | Bedding |  | 2027-03-30 → 2027-04-18 (+19d) |  | 50.38d → 31.2d |
| A1320 | UPVC Pipes |  | 2027-02-27 → 2027-03-20 (+21d) |  | 81.8d → 60.8d |
| A1330 | GRP Pipes |  | 2027-01-13 → 2027-02-03 (+21d) |  | 126.6d → 105.6d |
| A1340 | HDPE Pipes |  | 2026-12-09 → 2026-12-28 (+19d) |  | 161.8d → 142.27d |
| A1350 | HDPE Fitting |  | 2027-03-02 → 2027-03-23 (+21d) |  | 78.6d → 57.6d |
| A1380 | Manhoule |  | 2027-01-26 → 2027-02-03 (+8d) | 45% → 49% | 113d → 105.08d |
| A1370 | Valve Champer |  | 2026-11-05 → 2026-11-20 (+15d) | 22% → 26% | 99.94d → 84.04d |
| A1400 | Thurst Block |  | 2026-10-28 → 2026-11-18 (+21d) |  | 25.55d → 4.55d |
| A1360 | Valves | 2026-10-03 → 2026-10-24 (+21d) | 2026-11-01 → 2026-11-22 (+21d) |  | 103d → 82d |
| 1 | **Pump Station (PS01)** |  | 2026-12-04 → 2026-12-25 (+21d) |  |  |
| A1450 | Fual System Tank |  | 2026-10-25 → 2026-11-15 (+21d) |  | 166.25d → 145.25d |
| A1420 | Odor System | 2026-10-03 → 2026-10-24 (+21d) | 2026-12-01 → 2026-12-22 (+21d) |  | 169d → 148d |
| A1460 | Concrete Element Works | 2026-10-03 → 2026-10-24 (+21d) | 2026-12-01 → 2026-12-22 (+21d) |  | 169d → 148d |
| A1510 | Interlock Paving | 2026-10-03 → 2026-10-24 (+21d) | 2026-10-15 → 2026-11-05 (+21d) |  | 37.75d → 16.75d |
| A1440 | Raked bar SS 316 (35 mm) | 2026-10-25 → 2026-11-15 (+21d) | 2026-11-09 → 2026-11-30 (+21d) |  | 166.25d → 145.25d |
| A1490 | UPVC Ducts | 2026-10-25 → 2026-11-15 (+21d) | 2026-11-09 → 2026-11-30 (+21d) |  | 176.25d → 155.25d |
| A1410 | Pumps | 2026-11-09 → 2026-11-30 (+21d) | 2026-11-24 → 2026-12-15 (+21d) |  | 166.25d → 145.25d |
| A1500 | Earthing | 2026-11-09 → 2026-11-30 (+21d) | 2026-11-24 → 2026-12-15 (+21d) |  | 176.25d → 155.25d |
| A1430 | In-line Booste Station | 2026-11-24 → 2026-12-15 (+21d) | 2026-12-04 → 2026-12-25 (+21d) |  | 166.25d → 145.25d |
| 2 | **Pump Station (PS02)** |  | 2026-12-16 → 2027-01-06 (+21d) |  |  |
| A1570 | Concrete Element Works |  | 2026-11-13 → 2026-12-04 (+21d) |  | 187.06d → 166.07d |
| A1540 | In-line Booste Station |  | 2026-10-26 → 2026-11-16 (+21d) |  | 205.38d → 184.38d |
| A1550 | Valves | 2027-08-25 A → 2026-08-25 A (-365d) | 2026-10-09 → 2026-10-30 (+21d) | 56% → 57% | 19.23d → -1.77d |
| A1530 | Odor System |  | 2026-11-01 → 2026-11-22 (+21d) |  | 199d → 178d |
| A1600 | UPVC Ducts | 2026-10-03 → 2026-10-24 (+21d) | 2026-11-01 → 2026-11-22 (+21d) |  | 154d → 133d |
| A1620 | Interlock Paving | 2026-10-09 → 2026-10-30 (+21d) | 2026-11-03 → 2026-11-24 (+21d) |  | 19.23d → -1.77d |
| A1610 | Earthing | 2026-11-02 → 2026-11-23 (+21d) | 2026-12-01 → 2026-12-22 (+21d) |  | 154d → 133d |
| A1520 | Pumps | 2026-12-02 → 2026-12-23 (+21d) | 2026-12-16 → 2027-01-06 (+21d) |  | 154d → 133d |
| 3 | **Pump Station (PS03)** |  | 2026-12-01 → 2026-12-22 (+21d) |  |  |
| A1680 | Concrete Element Works |  | 2026-11-05 → 2026-11-26 (+21d) |  | 169d → 148d |
| A1650 | In-line Booste Station |  | 2026-10-21 → 2026-11-11 (+21d) |  | 18.85d → -2.15d |
| A1640 | Odor System |  | 2026-10-12 → 2026-11-02 (+21d) |  | 169d → 148d |
| A1670 | Entrance Gates | 2026-10-03 → 2026-10-24 (+21d) | 2026-12-01 → 2026-12-22 (+21d) |  | 169d → 148d |
| A1710 | UPVC Ducts | 2026-10-13 → 2026-11-03 (+21d) | 2026-11-01 → 2026-11-22 (+21d) |  | 169d → 148d |

| ID | Task | Start | Finish | Complete | Total float | Other |
| --- | --- | --- | --- | --- | --- | --- |
| A1730 | Interlock Paving | 2026-10-21 → 2026-11-11 (+21d) | 2026-11-03 → 2026-11-24 (+21d) |  | 18.85d → -2.15d |  |
| A1720 | Earthing | 2026-11-02 → 2026-11-23 (+21d) | 2026-11-16 → 2026-12-07 (+21d) |  | 169d → 148d |  |
| A1630 | Pumps | 2026-11-17 → 2026-12-08 (+21d) | 2026-12-01 → 2026-12-22 (+21d) |  | 169d → 148d |  |
| A1660 | Valves |  | 2026-10-09 → 2026-10-30 (+21d) |  | 222.49d → 201.49d |  |
| 4 | **Pump Station (PS04)** |  | 2026-12-14 → 2026-12-30 (+16d) |  |  |  |
| A1800 | MCC Buildingn ( Civil Work ) |  | 2026-10-03 → 2026-10-24 (+21d) |  | 198.64d → 177.64d |  |
| A1890 | Fual System Tank |  | 2026-10-30 → 2026-11-20 (+21d) |  | 161.7d → 140.7d |  |
| A1750 | Odor System |  | 2026-10-25 → 2026-11-15 (+21d) |  | 196.5d → 175.5d |  |
| A1770 | Valves |  | 2026-10-08 → 2026-10-29 (+21d) |  | 32.39d → 11.39d |  |
| A1790 | Concrete Element Works | 2026-10-16 → 2026-10-24 (+8d) | 2026-12-14 → 2026-12-22 (+8d) |  | 156d → 148d |  |
| A1840 | Interlock Paving | 2026-10-08 → 2026-10-29 (+21d) | 2026-10-21 → 2026-11-11 (+21d) |  | 32.39d → 11.39d |  |
| A1780 | Raked bar SS 316 (35 mm) | 2026-10-30 → 2026-11-20 (+21d) | 2026-11-14 → 2026-12-05 (+21d) |  | 161.7d → 140.7d |  |
| A1820 | UPVC Ducts | 2026-10-30 → 2026-11-20 (+21d) | 2026-11-14 → 2026-12-05 (+21d) |  | 171.7d → 150.7d |  |
| A1740 | Pumps | 2026-11-14 → 2026-12-05 (+21d) | 2026-11-29 → 2026-12-20 (+21d) |  | 161.7d → 140.7d |  |
| A1830 | Earthing | 2026-11-14 → 2026-12-05 (+21d) | 2026-11-29 → 2026-12-20 (+21d) |  | 171.7d → 150.7d |  |
| A1760 | In-line Booste Station | 2026-11-29 → 2026-12-20 (+21d) | 2026-12-09 → 2026-12-30 (+21d) |  | 161.7d → 140.7d |  |
| 4 | **Potable Water Network** |  | 2027-02-13 → 2027-03-06 (+21d) |  |  |  |
| A1150 | Sand Bedding & Covr |  | 2026-10-12 → 2026-11-02 (+21d) |  | 219.76d → 198.76d |  |
| A1100 | HDPE Pipes |  | 2026-11-05 → 2026-11-14 (+9d) | 87% → 92% | 95.67d → 86.75d |  |
| A1210 | Water Tank |  | 2026-11-05 → 2026-11-25 (+20d) |  | 95.67d → 75.86d |  |
| A1110 | HDPE Fitting |  | 2026-12-04 → 2026-12-25 (+21d) |  | 166.3d → 145.3d |  |
| A1160 | Thrust Block |  | 2026-11-12 → 2026-12-03 (+21d) |  | 188.31d → 167.32d |  |
| A1220 | Generator |  | 2027-02-13 → 2027-03-06 (+21d) |  | 95.65d → 74.65d |  |
| A1120 | Valves |  | 2026-12-06 → 2026-12-23 (+17d) | 61% → 63% | 164.65d → 147.66d |  |
| A1130 | Fire Hydrant |  | 2026-10-11 → 2026-10-27 (+16d) | 70% → 90% | 220d → 204.99d |  |
| A1240 | Street Lighting |  | 2026-12-12 → 2027-01-02 (+21d) |  | 62.72d → 41.72d |  |
| A1140 | Valve Champer |  | 2026-10-14 → 2026-11-03 (+20d) | 24% → 27% | 31.57d → 11.09d |  |
| A1230 | Coloration System |  | 2026-10-08 → 2026-10-29 (+21d) |  | 50.75d → 29.75d |  |
| A1200 | Pump Building | 2026-11-05 → 2026-11-25 (+20d) | 2027-01-04 → 2027-01-24 (+20d) |  | 95.67d → 75.86d |  |
| A1170 | Fire Fighting Pump | 2027-01-04 → 2027-01-24 (+20d) | 2027-01-14 → 2027-02-03 (+20d) |  | 95.67d → 75.86d |  |
| A1180 | Surge vessel Fual System Tank | 2027-01-14 → 2027-02-03 (+20d) | 2027-02-03 → 2027-02-23 (+20d) |  | 95.67d → 75.86d |  |
| A1190 | Surge vessel Valve | 2027-02-03 → 2027-02-23 (+20d) | 2027-02-13 → 2027-03-05 (+20d) |  | 95.67d → 75.86d |  |
| 5 | **Irrigation Network** |  | 2027-02-01 → 2027-02-18 (+17d) |  |  |  |
| A1300 | Bedding |  | 2026-10-16 → 2026-11-06 (+21d) |  | 215.4d → 194.4d |  |
| A1250 | HDPE Pipes |  | 2026-10-28 → 2026-11-11 (+14d) | 88% → 91% | 203.38d → 189.25d |  |
| A1260 | HDPE Fitting |  | 2027-01-03 → 2027-01-24 (+21d) |  | 136.6d → 115.6d |  |
| A1270 | Valves |  | 2026-11-23 → 2026-12-14 (+21d) |  | 177d → 156d |  |
| A1290 | Flow meter Valves |  | 2027-02-01 → 2027-02-18 (+17d) | 39% → 41% | 107.2d → 90.76d |  |
| A1280 | Valve Champer |  | 2026-11-16 → 2026-12-07 (+21d) |  | 88.2d → 67.2d |  |
| A1310 | Thrust Block |  | 2026-12-18 → 2027-01-08 (+21d) |  | -27.03d → -48.03d |  |
| 9 | **Road Crossing** |  | 2026-12-07 → 2026-12-28 (+21d) |  |  |  |
| A2170 | Rood Crossing UPVC Selves |  | 2026-12-07 → 2026-12-28 (+21d) |  | 27d → 6d |  |
| 2 | **Road Works** | 2026-10-31 → 2026-11-03 (+3d) | 2027-01-28 → 2027-02-01 (+4d) |  |  |  |
| A1030 | MC1 | 2026-10-31 → 2026-11-03 (+3d) | 2026-11-19 → 2026-11-23 (+4d) |  | 15d → 11.09d | constraint start on or after 2026-10-31 → none |
| A1040 | Binder Course | 2026-11-20 → 2026-11-23 (+3d) | 2026-12-09 → 2026-12-13 (+4d) |  | 15d → 11.09d |  |
| A1050 | Wearing Couse | 2026-12-10 → 2026-12-13 (+3d) | 2026-12-29 → 2027-01-02 (+4d) |  | 15d → 11.09d |  |
| A1060 | Pre-Cast Cerb | 2026-12-30 → 2027-01-02 (+3d) | 2027-01-28 → 2027-02-01 (+4d) |  | 15d → 11.09d |  |
| 1 | **Hard Scape ( Curbstone )** |  | 2027-01-17 → 2027-01-14 (-3d) |  |  |  |
| A1020 | Pre-Cast Cerb |  | 2027-01-17 → 2027-01-14 (-3d) | 12% → 31% | 26.92d → 29.49d |  |
| 10 | **Secondary Irrigation Network** | 2026-11-08 → 2026-10-26 (-13d) | 2027-01-18 → 2027-01-05 (-13d) |  |  |  |
| A2240 | Clean Sand | 2026-11-08 → 2026-10-26 (-13d) | 2026-11-23 → 2026-11-10 (-13d) |  | -36.92d → -24d | constraint start on or after 2026-11-08 → none |
| A2220 | Gravel 150 mm | 2026-11-23 → 2026-11-11 (-12d) | 2026-12-03 → 2026-11-20 (-13d) |  | -36.92d → -24d |  |
| A2250 | Irrigation System | 2026-12-03 → 2026-11-21 (-12d) | 2026-12-18 → 2026-12-05 (-13d) |  | -36.92d → -24d |  |
| A2180 | Phoenix Dactylifera | 2026-12-18 → 2026-12-06 (-12d) | 2027-01-02 → 2026-12-20 (-13d) |  | -36.92d → -24d |  |
| A2190 | Shrubs and Vines, | 2026-12-18 → 2026-12-06 (-12d) | 2027-01-02 → 2026-12-20 (-13d) |  | -36.92d → -24d |  |
| A2200 | Peltophorum Inerme | 2026-12-18 → 2026-12-06 (-12d) | 2027-01-02 → 2026-12-20 (-13d) |  | -36.92d → -24d |  |
| A2210 | Atriplex canescens | 2026-12-18 → 2026-12-06 (-12d) | 2027-01-02 → 2026-12-20 (-13d) |  | -36.92d → -24d |  |
| A2260 | Maintance | 2027-01-02 → 2026-12-21 (-12d) | 2027-01-18 → 2027-01-05 (-13d) |  | -36.92d → -24d |  |
| 3 | **Telecom** |  | 2027-04-15 → 2027-05-06 (+21d) |  |  |  |
| A1090 | Manhole |  | 2026-10-13 → 2026-11-03 (+21d) |  | 218.51d → 197.95d |  |
| A1070 | Duct Bank |  | 2027-04-15 → 2027-05-06 (+21d) |  | -61.4d → -82.4d |  |
| A1080 | Road Crossing |  | 2026-11-11 → 2026-11-19 (+8d) | 89% → 93% | 93.29d → 85.97d |  |
| 12 | **Testing & Comissioning** | 2026-10-03 → 2026-10-24 (+21d) | 2027-04-03 → 2027-04-24 (+21d) |  |  |  |
| A2230 | Potable Water T&C | 2026-10-03 → 2026-10-24 (+21d) | 2027-01-14 → 2027-02-04 (+21d) |  | 43.7d → 25.7d |  |
| A2360 | Seweage Testing & Comissiong | 2026-11-03 → 2026-11-24 (+21d) | 2027-02-16 → 2027-03-09 (+21d) |  | 15.88d → -2.12d |  |
| A2340 | Lateral Irrigation Network T&C | 2026-12-19 → 2027-01-09 (+21d) | 2027-04-03 → 2027-04-24 (+21d) |  | -23.3d → -41.3d |  |
| A2370 | Drainage Network T&C | 2027-01-23 → 2027-02-13 (+21d) | 2027-04-03 → 2027-04-24 (+21d) |  | -23.2d → -41.2d |  |
| 3 | **Saving Scope** | 2027-01-18 → 2027-01-06 (-12d) | 2027-06-25 → 2027-06-12 (-13d) |  |  |  |
| 11 | **General Works** | 2027-01-18 → 2027-01-06 (-12d) | 2027-02-17 → 2027-02-04 (-13d) |  |  |  |
| A2280 | Saving Works | 2027-01-18 → 2027-01-06 (-12d) | 2027-02-17 → 2027-02-04 (-13d) |  | -36.92d → -24d |  |

| ID | Task | Start | Finish | Total float |
| --- | --- | --- | --- | --- |
| 1 | **Local Road** | 2027-02-17 → 2027-02-05 (-12d) | 2027-03-04 → 2027-02-19 (-13d) |  |
| A2290 | Saving Works | 2027-02-17 → 2027-02-05 (-12d) | 2027-03-04 → 2027-02-19 (-13d) | -36.92d → -24d |
| 5 | **Lateral Irrigation Network** | 2027-03-04 → 2027-02-20 (-12d) | 2027-04-18 → 2027-04-05 (-13d) |  |
| A2300 | Saving Works | 2027-03-04 → 2027-02-20 (-12d) | 2027-04-18 → 2027-04-05 (-13d) | -36.92d → -24d |
| 7 | **Drainage Network** | 2027-04-18 → 2027-04-06 (-12d) | 2027-06-06 → 2027-05-24 (-13d) |  |
| A2310 | Saving Works | 2027-04-18 → 2027-04-06 (-12d) | 2027-06-06 → 2027-05-24 (-13d) | -36.92d → -24d |
| 8 | **Pounds** | 2027-04-18 → 2027-04-06 (-12d) | 2027-06-25 → 2027-06-12 (-13d) |  |
| A2320 | Saving Works | 2027-04-18 → 2027-04-06 (-12d) | 2027-06-25 → 2027-06-12 (-13d) | -36.92d → -24d |
| 9 | **Road Crossing** | 2027-04-18 → 2027-04-06 (-12d) | 2027-06-25 → 2027-06-12 (-13d) |  |
| A2330 | Saving Works | 2027-04-18 → 2027-04-06 (-12d) | 2027-06-25 → 2027-06-12 (-13d) | -36.92d → -24d |

## Version 3 (data date 2026-11-07, saved 2026-11-08, file MDD-Revised Update-11-08-2026.xer)

Last finish 2027-06-12 → 2027-06-26 (+14d).

Changed:

| ID | Task | Start | Finish | Complete | Total float |
| --- | --- | --- | --- | --- | --- |
| 7 | **Part 02** |  | 2027-06-12 → 2027-06-26 (+14d) |  |  |
| 1 | **MileStones** |  | 2027-06-12 → 2027-06-26 (+14d) |  |  |
| A2350 | T&C Finish Date | 2027-04-24 → 2027-05-08 (+14d) | 2027-04-24 → 2027-05-08 (+14d) |  | -41.3d → -53.3d |
| A1860 | Revised Scope Finish date | 2027-05-06 → 2027-05-20 (+14d) | 2027-05-06 → 2027-05-20 (+14d) |  | -82.4d → -96.4d |
| A1870 | Saving Scope Finish date | 2027-06-12 → 2027-06-26 (+14d) | 2027-06-12 → 2027-06-26 (+14d) |  | -24d → -38d |
| A1880 | Project Finish | 2027-06-12 → 2027-06-26 (+14d) | 2027-06-12 → 2027-06-26 (+14d) |  | -24d → -38d |
| 2 | **Revised Scope** |  | 2027-05-06 → 2027-05-20 (+14d) |  |  |
| 7 | **Storm Network** |  | 2027-04-18 → 2027-05-02 (+14d) |  |  |
| A2000 | Bedding |  | 2027-04-18 → 2027-05-02 (+14d) |  | 31.2d → 17.2d |
| A1920 | GRP Pipes |  | 2026-11-24 → 2026-12-08 (+14d) |  | 176.19d → 162.19d |
| A1910 | UPVC |  | 2026-11-30 → 2026-12-14 (+14d) |  | 170.6d → 156.6d |
| A2020 | Beeding Open UPVC drainage pipes |  | 2026-10-26 → 2026-11-09 (+14d) |  | 205.48d → 191.48d |
| A2010 | Open UPVC drainage pipes |  | 2026-11-22 → 2026-12-06 (+14d) |  | 178.6d → 164.6d |
| A1990 | Drinage Champer |  | 2026-11-18 → 2026-12-02 (+14d) |  | 182.1d → 168.1d |
| A1970 | Catch Basins |  | 2026-11-10 → 2026-11-23 (+13d) | 84% → 85% | 190.95d → 177.46d |
| A2030 | Geotextile |  | 2026-10-26 → 2026-11-09 (+14d) |  | 205.48d → 191.48d |
| A1980 | Swales |  | 2026-12-06 → 2026-12-20 (+14d) |  | 164.6d → 150.6d |
| A1960 | Gully outfalls |  | 2026-11-10 → 2026-11-24 (+14d) |  | 94.42d → 80.42d |
| A1950 | Manhoule |  | 2027-03-26 → 2027-04-09 (+14d) |  | 54.4d → 40.4d |
| A2040 | Collection sump |  | 2026-12-14 → 2026-12-26 (+12d) | 68% → 69% | 156.14d → 144.54d |
| A1930 | Box Culvert |  | 2027-03-25 → 2027-04-08 (+14d) |  | -48.25d → -62.25d |
| A1940 | Pipes Culvert | 2026-10-24 → 2026-11-07 (+14d) | 2027-02-13 → 2027-02-27 (+14d) |  | -48.25d → -62.25d |
| 8 | **Ponds** |  | 2027-02-06 → 2027-02-20 (+14d) |  |  |
| A2380 | Riprap |  | 2026-12-10 → 2026-12-24 (+14d) |  | 24.58d → 10.58d |
| A2110 | blinding & Walls Concerete |  | 2026-10-26 → 2026-11-09 (+14d) |  | 205d → 191d |
| A2120 | RAFT Concerete |  | 2026-10-26 → 2026-11-09 (+14d) |  | 205.59d → 191.59d |
| A2130 | Backfilling |  | 2026-11-08 → 2026-11-22 (+14d) |  | 192.06d → 178.06d |
| A2140 | Power Floating |  | 2026-12-02 → 2026-12-16 (+14d) |  | 168.4d → 154.4d |
| A2100 | Siphon pipework |  | 2026-10-28 → 2026-11-11 (+14d) |  | 203.2d → 189.2d |
| A2060 | Excavation |  | 2026-11-03 → 2026-11-17 (+14d) |  | 197.8d → 183.8d |
| A2090 | HDPE geomembrane waterproofing |  | 2026-11-17 → 2026-12-01 (+14d) |  | 183.28d → 169.28d |
| A2150 | Perimeter waterproof |  | 2026-11-12 → 2026-11-26 (+14d) |  | 52.8d → 38.8d |
| A2070 | Disposal Material |  | 2026-10-26 → 2026-11-09 (+14d) |  | -24d → -38d |
| A2080 | Filter |  | 2026-10-30 → 2026-11-13 (+14d) |  | 201.59d → 187.59d |
| A2160 | Entrance Rood | 2026-12-29 → 2027-01-12 (+14d) | 2027-02-06 → 2027-02-20 (+14d) |  | 6d → -8d |
| 6 | **Sewage Network** |  | 2027-04-18 → 2027-05-02 (+14d) |  |  |
| A1390 | Bedding |  | 2027-04-18 → 2027-05-02 (+14d) |  | 31.2d → 17.2d |
| A1320 | UPVC Pipes |  | 2027-03-20 → 2027-04-03 (+14d) |  | 60.8d → 46.8d |
| A1330 | GRP Pipes |  | 2027-02-03 → 2027-02-17 (+14d) |  | 105.6d → 91.6d |
| A1340 | HDPE Pipes |  | 2026-12-28 → 2027-01-11 (+14d) |  | 142.27d → 128.27d |
| A1350 | HDPE Fitting |  | 2027-03-23 → 2027-04-06 (+14d) |  | 57.6d → 43.6d |
| A1380 | Manhoule |  | 2027-02-03 → 2027-02-13 (+10d) | 49% → 51% | 105.08d → 95.18d |
| A1370 | Valve Champer |  | 2026-11-20 → 2026-12-04 (+14d) |  | 84.04d → 70.04d |
| A1400 | Thurst Block |  | 2026-11-18 → 2026-12-02 (+14d) |  | 4.55d → -9.45d |
| A1360 | Valves | 2026-10-24 → 2026-11-07 (+14d) | 2026-11-22 → 2026-12-06 (+14d) |  | 82d → 68d |
| 1 | **Pump Station (PS01)** |  | 2026-12-25 → 2027-01-08 (+14d) |  |  |
| A1450 | Fual System Tank |  | 2026-11-15 → 2026-11-29 (+14d) |  | 145.25d → 131.25d |
| A1420 | Odor System | 2026-10-24 → 2026-11-07 (+14d) | 2026-12-22 → 2027-01-05 (+14d) |  | 148d → 134d |
| A1460 | Concrete Element Works | 2026-10-24 → 2026-11-07 (+14d) | 2026-12-22 → 2027-01-05 (+14d) |  | 148d → 134d |
| A1510 | Interlock Paving | 2026-10-24 → 2026-11-07 (+14d) | 2026-11-05 → 2026-11-19 (+14d) |  | 16.75d → 2.75d |
| A1440 | Raked bar SS 316 (35 mm) | 2026-11-15 → 2026-11-29 (+14d) | 2026-11-30 → 2026-12-14 (+14d) |  | 145.25d → 131.25d |
| A1490 | UPVC Ducts | 2026-11-15 → 2026-11-29 (+14d) | 2026-11-30 → 2026-12-14 (+14d) |  | 155.25d → 141.25d |
| A1410 | Pumps | 2026-11-30 → 2026-12-14 (+14d) | 2026-12-15 → 2026-12-29 (+14d) |  | 145.25d → 131.25d |
| A1500 | Earthing | 2026-11-30 → 2026-12-14 (+14d) | 2026-12-15 → 2026-12-29 (+14d) |  | 155.25d → 141.25d |
| A1430 | In-line Booste Station | 2026-12-15 → 2026-12-29 (+14d) | 2026-12-25 → 2027-01-08 (+14d) |  | 145.25d → 131.25d |
| 2 | **Pump Station (PS02)** |  | 2027-01-06 → 2027-01-20 (+14d) |  |  |
| A1570 | Concrete Element Works |  | 2026-12-04 → 2026-12-18 (+14d) |  | 166.07d → 152.07d |
| A1540 | In-line Booste Station |  | 2026-11-16 → 2026-11-30 (+14d) |  | 184.38d → 170.38d |
| A1550 | Valves |  | 2026-10-30 → 2026-11-13 (+14d) |  | -1.77d → -15.77d |
| A1530 | Odor System |  | 2026-11-22 → 2026-12-06 (+14d) |  | 178d → 164d |
| A1600 | UPVC Ducts | 2026-10-24 → 2026-11-07 (+14d) | 2026-11-22 → 2026-12-06 (+14d) |  | 133d → 119d |
| A1620 | Interlock Paving | 2026-10-30 → 2026-11-13 (+14d) | 2026-11-24 → 2026-12-08 (+14d) |  | -1.77d → -15.77d |
| A1610 | Earthing | 2026-11-23 → 2026-12-07 (+14d) | 2026-12-22 → 2027-01-05 (+14d) |  | 133d → 119d |
| A1520 | Pumps | 2026-12-23 → 2027-01-06 (+14d) | 2027-01-06 → 2027-01-20 (+14d) |  | 133d → 119d |
| 3 | **Pump Station (PS03)** |  | 2026-12-22 → 2027-01-05 (+14d) |  |  |
| A1680 | Concrete Element Works |  | 2026-11-26 → 2026-12-10 (+14d) |  | 148d → 134d |
| A1650 | In-line Booste Station |  | 2026-11-11 → 2026-11-25 (+14d) |  | -2.15d → -16.15d |
| A1640 | Odor System |  | 2026-11-02 → 2026-11-16 (+14d) |  | 148d → 134d |
| A1670 | Entrance Gates | 2026-10-24 → 2026-11-07 (+14d) | 2026-12-22 → 2027-01-05 (+14d) |  | 148d → 134d |
| A1710 | UPVC Ducts | 2026-11-03 → 2026-11-17 (+14d) | 2026-11-22 → 2026-12-06 (+14d) |  | 148d → 134d |

| ID | Task | Start | Finish | Complete | Total float |
| --- | --- | --- | --- | --- | --- |
| A1730 | Interlock Paving | 2026-11-11 → 2026-11-25 (+14d) | 2026-11-24 → 2026-12-08 (+14d) |  | -2.15d → -16.15d |
| A1720 | Earthing | 2026-11-23 → 2026-12-07 (+14d) | 2026-12-07 → 2026-12-21 (+14d) |  | 148d → 134d |
| A1630 | Pumps | 2026-12-08 → 2026-12-22 (+14d) | 2026-12-22 → 2027-01-05 (+14d) |  | 148d → 134d |
| A1660 | Valves |  | 2026-10-30 → 2026-11-13 (+14d) |  | 201.49d → 187.49d |
| 4 | **Pump Station (PS04)** |  | 2026-12-30 → 2027-01-13 (+14d) |  |  |
| A1800 | MCC Buildingn ( Civil Work ) |  | 2026-10-24 → 2026-11-07 (+14d) |  | 177.64d → 163.64d |
| A1890 | Fual System Tank |  | 2026-11-20 → 2026-12-04 (+14d) |  | 140.7d → 126.7d |
| A1750 | Odor System |  | 2026-11-15 → 2026-11-29 (+14d) |  | 175.5d → 161.5d |
| A1770 | Valves |  | 2026-10-29 → 2026-11-12 (+14d) |  | 11.39d → -2.61d |
| A1790 | Concrete Element Works | 2026-10-24 → 2026-11-07 (+14d) | 2026-12-22 → 2027-01-05 (+14d) |  | 148d → 134d |
| A1840 | Interlock Paving | 2026-10-29 → 2026-11-12 (+14d) | 2026-11-11 → 2026-11-25 (+14d) |  | 11.39d → -2.61d |
| A1780 | Raked bar SS 316 (35 mm) | 2026-11-20 → 2026-12-04 (+14d) | 2026-12-05 → 2026-12-19 (+14d) |  | 140.7d → 126.7d |
| A1820 | UPVC Ducts | 2026-11-20 → 2026-12-04 (+14d) | 2026-12-05 → 2026-12-19 (+14d) |  | 150.7d → 136.7d |
| A1740 | Pumps | 2026-12-05 → 2026-12-19 (+14d) | 2026-12-20 → 2027-01-03 (+14d) |  | 140.7d → 126.7d |
| A1830 | Earthing | 2026-12-05 → 2026-12-19 (+14d) | 2026-12-20 → 2027-01-03 (+14d) |  | 150.7d → 136.7d |
| A1760 | In-line Booste Station | 2026-12-20 → 2027-01-03 (+14d) | 2026-12-30 → 2027-01-13 (+14d) |  | 140.7d → 126.7d |
| 4 | **Potable Water Network** |  | 2027-03-06 → 2027-03-20 (+14d) |  |  |
| A1150 | Sand Bedding & Covr |  | 2026-11-02 → 2026-11-16 (+14d) |  | 198.76d → 184.76d |
| A1100 | HDPE Pipes |  | 2026-11-14 → 2026-11-28 (+14d) |  | 86.75d → 112.75d |
| A1210 | Water Tank |  | 2026-11-25 → 2026-12-09 (+14d) |  | 75.86d → 101.86d |
| A1110 | HDPE Fitting |  | 2026-12-25 → 2027-01-08 (+14d) |  | 145.3d → 131.3d |
| A1160 | Thrust Block |  | 2026-12-03 → 2026-12-17 (+14d) |  | 167.32d → 153.32d |
| A1220 | Generator |  | 2027-03-06 → 2027-03-20 (+14d) |  | 74.65d → 60.65d |
| A1120 | Valves |  | 2026-12-23 → 2027-01-06 (+14d) |  | 147.66d → 133.66d |
| A1130 | Fire Hydrant |  | 2026-10-27 → 2026-11-09 (+13d) | 90% → 93% | 204.99d → 191.96d |
| A1240 | Street Lighting |  | 2027-01-02 → 2027-01-07 (+5d) | 37% → 45% | 41.72d → 36.9d |
| A1140 | Valve Champer |  | 2026-11-03 → 2026-11-17 (+14d) | 27% → 28% | 11.09d → -2.84d |
| A1230 | Coloration System |  | 2026-10-29 → 2026-11-09 (+11d) | 75% → 90% | 29.75d → 15.75d |
| A1170 | Fire Fighting Pump | 2027-01-24 → 2026-10-19 A (-97d) | 2027-02-03 → 2026-11-12 (-83d) | 0% → 41% | 75.86d → 158.06d |
| A1180 | Surge vessel Fual System Tank | 2027-02-03 → 2026-11-12 (-83d) | 2027-02-23 → 2026-12-02 (-83d) |  | 75.86d → 158.06d |
| A1190 | Surge vessel Valve | 2027-02-23 → 2026-12-02 (-83d) | 2027-03-05 → 2026-12-12 (-83d) |  | 75.86d → 158.06d |
| A1200 | Pump Building | 2026-11-25 → 2026-12-09 (+14d) | 2027-01-24 → 2027-02-07 (+14d) |  | 75.86d → 101.86d |
| 5 | **Irrigation Network** |  | 2027-02-18 → 2027-03-04 (+14d) |  |  |
| A1300 | Bedding |  | 2026-11-06 → 2026-11-20 (+14d) |  | 194.4d → 180.4d |
| A1250 | HDPE Pipes |  | 2026-11-11 → 2026-11-25 (+14d) |  | 189.25d → 175.25d |
| A1260 | HDPE Fitting |  | 2027-01-24 → 2027-02-07 (+14d) |  | 115.6d → 101.6d |
| A1270 | Valves |  | 2026-12-14 → 2026-12-28 (+14d) |  | 156d → 142d |
| A1290 | Flow meter Valves |  | 2027-02-18 → 2027-03-04 (+14d) |  | 90.76d → 76.76d |
| A1280 | Valve Champer |  | 2026-12-07 → 2026-12-21 (+14d) |  | 67.2d → 53.2d |
| A1310 | Thrust Block |  | 2027-01-08 → 2027-01-22 (+14d) |  | -48.03d → -62.03d |
| 9 | **Road Crossing** |  | 2026-12-28 → 2027-01-11 (+14d) |  |  |
| A2170 | Rood Crossing UPVC Selves |  | 2026-12-28 → 2027-01-11 (+14d) |  | 6d → -8d |
| 2 | **Road Works** | 2026-11-03 → 2026-11-17 (+14d) | 2027-02-01 → 2027-02-15 (+14d) |  |  |
| A1030 | MC1 | 2026-11-03 → 2026-11-17 (+14d) | 2026-11-23 → 2026-12-07 (+14d) |  | 11.09d → -2.84d |
| A1040 | Binder Course | 2026-11-23 → 2026-12-07 (+14d) | 2026-12-13 → 2026-12-27 (+14d) |  | 11.09d → -2.84d |
| A1050 | Wearing Couse | 2026-12-13 → 2026-12-27 (+14d) | 2027-01-02 → 2027-01-16 (+14d) |  | 11.09d → -2.84d |
| A1060 | Pre-Cast Cerb | 2027-01-02 → 2027-01-16 (+14d) | 2027-02-01 → 2027-02-15 (+14d) |  | 11.09d → -2.84d |
| 1 | **Hard Scape ( Curbstone )** |  | 2027-01-14 → 2027-01-13 (-1d) |  |  |
| A1020 | Pre-Cast Cerb |  | 2027-01-14 → 2027-01-13 (-1d) | 31% → 44% | 29.49d → 30.48d |
| 10 | **Secondary Irrigation Network** | 2026-10-26 → 2026-11-09 (+14d) | 2027-01-05 → 2027-01-19 (+14d) |  |  |
| A2240 | Clean Sand | 2026-10-26 → 2026-11-09 (+14d) | 2026-11-10 → 2026-11-24 (+14d) |  | -24d → -38d |
| A2220 | Gravel 150 mm | 2026-11-11 → 2026-11-25 (+14d) | 2026-11-20 → 2026-12-04 (+14d) |  | -24d → -38d |
| A2250 | Irrigation System | 2026-11-21 → 2026-12-05 (+14d) | 2026-12-05 → 2026-12-19 (+14d) |  | -24d → -38d |
| A2180 | Phoenix Dactylifera | 2026-12-06 → 2026-12-20 (+14d) | 2026-12-20 → 2027-01-03 (+14d) |  | -24d → -38d |
| A2190 | Shrubs and Vines, | 2026-12-06 → 2026-12-20 (+14d) | 2026-12-20 → 2027-01-03 (+14d) |  | -24d → -38d |
| A2200 | Peltophorum Inerme | 2026-12-06 → 2026-12-20 (+14d) | 2026-12-20 → 2027-01-03 (+14d) |  | -24d → -38d |
| A2210 | Atriplex canescens | 2026-12-06 → 2026-12-20 (+14d) | 2026-12-20 → 2027-01-03 (+14d) |  | -24d → -38d |
| A2260 | Maintance | 2026-12-21 → 2027-01-04 (+14d) | 2027-01-05 → 2027-01-19 (+14d) |  | -24d → -38d |
| 3 | **Telecom** |  | 2027-05-06 → 2027-05-20 (+14d) |  |  |
| A1090 | Manhole |  | 2026-11-03 → 2026-11-17 (+14d) |  | 197.95d → 183.95d |
| A1070 | Duct Bank |  | 2027-05-06 → 2027-05-20 (+14d) |  | -82.4d → -96.4d |
| A1080 | Road Crossing |  | 2026-11-19 → 2026-12-03 (+14d) |  | 85.97d → 71.97d |
| 12 | **Testing & Comissioning** | 2026-10-24 → 2026-11-07 (+14d) | 2027-04-24 → 2027-05-08 (+14d) |  |  |
| A2230 | Potable Water T&C | 2026-10-24 → 2026-11-07 (+14d) | 2027-02-04 → 2027-02-18 (+14d) |  | 25.7d → 13.7d |
| A2360 | Seweage Testing & Comissiong | 2026-11-24 → 2026-12-08 (+14d) | 2027-03-09 → 2027-03-23 (+14d) |  | -2.12d → -14.12d |
| A2340 | Lateral Irrigation Network T&C | 2027-01-09 → 2027-01-23 (+14d) | 2027-04-24 → 2027-05-08 (+14d) |  | -41.3d → -53.3d |
| A2370 | Drainage Network T&C | 2027-02-13 → 2027-02-27 (+14d) | 2027-04-24 → 2027-05-08 (+14d) |  | -41.2d → -53.2d |
| 3 | **Saving Scope** | 2027-01-06 → 2027-01-20 (+14d) | 2027-06-12 → 2027-06-26 (+14d) |  |  |
| 11 | **General Works** | 2027-01-06 → 2027-01-20 (+14d) | 2027-02-04 → 2027-02-18 (+14d) |  |  |
| A2280 | Saving Works | 2027-01-06 → 2027-01-20 (+14d) | 2027-02-04 → 2027-02-18 (+14d) |  | -24d → -38d |

| ID | Task | Start | Finish | Total float |
| --- | --- | --- | --- | --- |
| 1 | **Local Road** | 2027-02-05 → 2027-02-19 (+14d) | 2027-02-19 → 2027-03-05 (+14d) |  |
| A2290 | Saving Works | 2027-02-05 → 2027-02-19 (+14d) | 2027-02-19 → 2027-03-05 (+14d) | -24d → -38d |
| 5 | **Lateral Irrigation Network** | 2027-02-20 → 2027-03-06 (+14d) | 2027-04-05 → 2027-04-19 (+14d) |  |
| A2300 | Saving Works | 2027-02-20 → 2027-03-06 (+14d) | 2027-04-05 → 2027-04-19 (+14d) | -24d → -38d |
| 7 | **Drainage Network** | 2027-04-06 → 2027-04-20 (+14d) | 2027-05-24 → 2027-06-07 (+14d) |  |
| A2310 | Saving Works | 2027-04-06 → 2027-04-20 (+14d) | 2027-05-24 → 2027-06-07 (+14d) | -24d → -38d |
| 8 | **Pounds** | 2027-04-06 → 2027-04-20 (+14d) | 2027-06-12 → 2027-06-26 (+14d) |  |
| A2320 | Saving Works | 2027-04-06 → 2027-04-20 (+14d) | 2027-06-12 → 2027-06-26 (+14d) | -24d → -38d |
| 9 | **Road Crossing** | 2027-04-06 → 2027-04-20 (+14d) | 2027-06-12 → 2027-06-26 (+14d) |  |
| A2330 | Saving Works | 2027-04-06 → 2027-04-20 (+14d) | 2027-06-12 → 2027-06-26 (+14d) | -24d → -38d |
