# Development of Phase One – Part Two – Third Industrial City in Dammam

How a schedule from Primavera P6 changed from version to version. A marks actual dates.

## Version 1 (data date 2025-05-19, saved 2025-08-09, file MOD-2937-B4- Approve BL.xer)

| ID | WBS | Task | Duration | Start | Finish | Predecessors | Total float | Constraint |
| --- | --- | --- | --- | --- | --- | --- | --- | --- |
|  | 1 | **Milestones** |  | 2025-05-19 | 2027-05-18 |  |  |  |
| MIL-0001 |  | Site Handover | 0d | 2025-05-19 | 2025-05-19 |  | 0d |  |
| MIL-0002 |  | Site Preparations | 0d | 2025-06-17 | 2025-06-17 | MOD-GEI-SF-001 | 700d |  |
| MIL-0004 |  | Submission and Approval of Drawings and Specifications | 0d | 2025-07-16 | 2025-07-16 | A1600, A1610, A1630, A1640, A1650 | 671d |  |
| MIL-0003 |  | Submission of Report, Work Plan, and Schedule | 0d | 2025-07-17 | 2025-07-17 | S100146, A1070, A1080 | 670d |  |
| MIL-0005 |  | Completion of Water Networks and Tanks | 0d | 2026-01-18 | 2026-01-18 | S100026, S100036, S100046, S100056, S100066, S100076, S100086, S100096, S100106, S100116, S100126, S100136, S100146, S100156, S100166, S100176, MOD-PWN-PI-313, MOD-PWN-PI-323, MOD-PWN-PI-333, MOD-PWN-PI-343, MOD-PWN-PI-353, MOD-PWN-PI-363, MOD-PWN-VC-107, MOD-PWN-VC-117, MOD-PWN-VC-127, MOD-PWN-VC-137, MOD-PWN-VC-77, MOD-PWN-VC-87, MOD-PWN-VC-97, MOD-PWN-FM-55, MOD-PWN-FM-65, MOD-PWN-FM-75, MOD-PWN-FM-85, MOD-PWN-FM-95, MOD-PWN-WA-107, MOD-PWN-WA-117, MOD-PWN-WA-127, MOD-PWN-WA-137, MOD-PWN-WA-77, MOD-PWN-WA-87, MOD-PWN-WA-97, MOD-PWN-PS-106, MOD-PWN-PS-116, MOD-PWN-PS-66, MOD-PWN-PS-76, MOD-PWN-PS-86, MOD-PWN-PS-96, MOD-PWN-PB-33, MOD-PWN-PB-43, MOD-PWN-PB-53, MOD-PWN-PE-108, MOD-PWN-PE-118, MOD-PWN-PE-128, MOD-PWN-PE-138, MOD-PWN-PE-148, MOD-PWN-PE-158, MOD-PWN-PE-88, MOD-PWN-PE-98, MOD-PWN-SP-22, MOD-PWN-SP-32, MOD-PWN-PG-44, MOD-PWN-PG-54, MOD-PWN-PG-64, MOD-PWN-PG-74, MOD-PWN-CS-33, MOD-PWN-CS-43, MOD-PWN-CS-53, MOD-PWN-WS-11, MOD-PWN-SL-55, MOD-PWN-SL-65, MOD-PWN-SL-75, MOD-PWN-SL-85, MOD-PWN-SL-95, MOD-IRN-EB-120, MOD-IRN-EB-130, MOD-IRN-EB-140, MOD-IRN-EB-150, MOD-IRN-EB-180, MOD-IRN-EB-190, MOD-IRN-VA-55, MOD-IRN-VA-65, MOD-IRN-VA-75, MOD-IRN-VA-85, MOD-IRN-VA-95, MOD-IRN-VR-107, MOD-IRN-VR-117, MOD-IRN-VR-127, MOD-IRN-VR-137, MOD-IRN-VR-77, MOD-IRN-VR-87, MOD-IRN-VR-97, MOD-IRN-WC-106, MOD-IRN-WC-116, MOD-IRN-WC-66, MOD-IRN-WC-76, MOD-IRN-WC-86, MOD-IRN-WC-96, MOD-IRN-AC-55, MOD-IRN-AC-65, MOD-IRN-AC-75, MOD-IRN-AC-85, MOD-IRN-AC-95, MOD-IRN-FC-106, MOD-IRN-FC-116, MOD-IRN-FC-66, MOD-IRN-FC-76, MOD-IRN-FC-86, MOD-IRN-FC-96, MOD-PWN-PI-143, MOD-PWN-PI-153, MOD-PWN-PI-163, MOD-PWN-PI-173, MOD-PWN-PI-203, MOD-PWN-PI-213, MOD-PWN-VC-17, MOD-PWN-VC-27, MOD-PWN-VC-37, MOD-PWN-VC-47, MOD-PWN-VC-57, MOD-PWN-VC-67, MOD-PWN-VC-7, MOD-PWN-FM-15, MOD-PWN-FM-25, MOD-PWN-FM-35, MOD-PWN-FM-45, MOD-PWN-FM-5, MOD-PWN-WA-17, MOD-PWN-WA-27, MOD-PWN-WA-37, MOD-PWN-WA-47, MOD-PWN-WA-57, MOD-PWN-WA-67, MOD-PWN-WA-7, MOD-IRN-EB-330, MOD-IRN-EB-340, MOD-IRN-EB-350, MOD-IRN-EB-360, MOD-IRN-EB-370, MOD-IRN-EB-380, MOD-IRN-VA-15, MOD-IRN-VA-25, MOD-IRN-VA-35, MOD-IRN-VA-45, MOD-IRN-VA-5, MOD-IRN-VR-17, MOD-IRN-VR-27, MOD-IRN-VR-37, MOD-IRN-VR-47, MOD-IRN-VR-57, MOD-IRN-VR-67, MOD-IRN-VR-7, MOD-IRN-WC-16, MOD-IRN-WC-26, MOD-IRN-WC-36, MOD-IRN-WC-46, MOD-IRN-WC-56, MOD-IRN-WC-6, MOD-IRN-AC-15, MOD-IRN-AC-25, MOD-IRN-AC-35, MOD-IRN-AC-45, MOD-IRN-AC-5, MOD-IRN-FC-16, MOD-IRN-FC-26, MOD-IRN-FC-36, MOD-IRN-FC-46, MOD-IRN-FC-56, MOD-IRN-FC-6, MOD-PWN-PI-373, MOD-PWN-PI-383, MOD-PWN-PI-393, MOD-PWN-PI-403, MOD-PWN-PI-413, MOD-PWN-PI-423, MOD-PWN-VC-001, MOD-PWN-VC-002, MOD-PWN-VC-003, MOD-PWN-VC-004, MOD-PWN-VC-005, MOD-PWN-VC-006, MOD-PWN-VC-007, MOD-PWN-FM-001, MOD-PWN-FM-002, MOD-PWN-FM-003, MOD-PWN-FM-004, MOD-PWN-FM-005, MOD-PWN-WA-001, MOD-PWN-WA-002, MOD-PWN-WA-003, MOD-PWN-WA-004, MOD-PWN-WA-005, MOD-PWN-WA-006, MOD-PWN-WA-007, MOD-IRN-EB-390, MOD-IRN-EB-400, MOD-IRN-EB-410, MOD-IRN-EB-420, MOD-IRN-EB-430, MOD-IRN-EB-440, MOD-IRN-VA-001, MOD-IRN-VA-002, MOD-IRN-VA-003, MOD-IRN-VA-004, MOD-IRN-VA-005, MOD-IRN-VR-001, MOD-IRN-VR-002, MOD-IRN-VR-003, MOD-IRN-VR-004, MOD-IRN-VR-005, MOD-IRN-VR-006, MOD-IRN-VR-007, MOD-IRN-WC-001, MOD-IRN-WC-002, MOD-IRN-WC-003, MOD-IRN-WC-004, MOD-IRN-WC-005, MOD-IRN-WC-006, MOD-IRN-AC-001, MOD-IRN-AC-002, MOD-IRN-AC-003, MOD-IRN-AC-004, MOD-IRN-AC-005, MOD-IRN-FC-001, MOD-IRN-FC-002, MOD-IRN-FC-003, MOD-IRN-FC-004, MOD-IRN-FC-005, MOD-IRN-FC-006 | 0d | finish on or before 2026-01-18 |
| MIL-0006 |  | Completion of Rainwater Drainage Works | 0d | 2026-01-18 | 2026-01-18 | MOD-RWN-PL-233, MOD-RWN-PL-243, MOD-RWN-PL-253, MOD-RWN-PL-263, MOD-RWN-PL-283, MOD-RWN-PL-293, MOD-RWN-PL-313, MOD-RWN-PL-323, MOD-RWN-PL-333, MOD-RWN-PL-343, MOD-RWN-PL-344, MOD-RWN-PL-353, MOD-RWN-PL-373, MOD-RWN-PL-383, MOD-RWN-PL-393, MOD-RWN-PL-403, MOD-RWN-PL-413, MOD-RWN-PL-723, MOD-RWN-PC-234, MOD-RWN-PC-244, MOD-RWN-PC-254, MOD-RWN-PC-264, MOD-RWN-PC-274, MOD-RWN-PC-284, MOD-RWN-PC-294, MOD-RWN-PC-304, MOD-RWN-PC-314, MOD-RWN-PC-444, MOD-RWN-PC-454, MOD-RWN-PC-464, MOD-RWN-PC-324, MOD-RWN-PC-334, MOD-RWN-PC-344, MOD-RWN-PC-354, MOD-RWN-PC-364, MOD-RWN-PC-374, MOD-RWN-PC-384, MOD-RWN-PC-394, MOD-RWN-PC-404, MOD-RWN-PC-414, MOD-RWN-PC-424, MOD-RWN-PC-434, MOD-RWN-MH-234, MOD-RWN-MH-244, MOD-RWN-MH-254, MOD-RWN-MH-264, MOD-RWN-MH-274, MOD-RWN-MH-284, MOD-RWN-MH-294, MOD-RWN-MH-374, MOD-RWN-MH-384, MOD-RWN-MH-394, MOD-RWN-MH-404, MOD-RWN-MH-414, MOD-RWN-MH-424, MOD-RWN-MH-434, MOD-RWN-MH-304, MOD-RWN-MH-314, MOD-RWN-MH-324, MOD-RWN-MH-334, MOD-RWN-MH-344, MOD-RWN-MH-354, MOD-RWN-MH-364, MOD-RWN-CC-168, MOD-RWN-CC-178, MOD-RWN-CC-188, MOD-RWN-CC-198, MOD-RWN-CC-208, MOD-RWN-CC-218, MOD-RWN-CC-228, MOD-RWN-CC-238, MOD-RWN-CC-248, MOD-RWN-CC-258, MOD-RWN-CC-268, MOD-RWN-CC-278, MOD-RWN-CC-288, MOD-RWN-CC-298, MOD-RWN-CC-308, MOD-RWN-GO-101, MOD-RWN-GO-111, MOD-RWN-GO-121, MOD-RWN-GO-131, MOD-RWN-GO-141, MOD-RWN-GO-151, MOD-RWN-GO-161, MOD-RWN-GO-171, MOD-RWN-GO-181, MOD-RWN-BB-112, MOD-RWN-BB-122, MOD-RWN-BB-132, MOD-RWN-BB-142, MOD-RWN-BB-152, MOD-RWN-BB-162, MOD-RWN-BB-172, MOD-RWN-BB-182, MOD-RWN-BB-192, MOD-RWN-BB-202, MOD-RWN-DB-001, MOD-RWN-DB-002, MOD-RWN-DB-003, MOD-RWN-DB-004, MOD-RWN-DB-005, MOD-RWN-DB-006, MOD-RWN-PL-733, MOD-RWN-PL-743, MOD-RWN-PL-753, MOD-RWN-PL-763, MOD-RWN-PL-773, MOD-RWN-PL-783, MOD-RWN-PL-793, MOD-RWN-PL-803, MOD-RWN-PL-813, MOD-RWN-PL-823, MOD-RWN-PL-833, MOD-RWN-PL-893, MOD-RWN-PL-843, MOD-RWN-PL-853, MOD-RWN-PL-863, MOD-RWN-PL-873, MOD-RWN-PL-883, MOD-RWN-PL-903, MOD-RWN-PC-104, MOD-RWN-PC-24, MOD-RWN-PC-34, MOD-RWN-PC-44, MOD-RWN-PC-474, MOD-RWN-PC-484, MOD-RWN-PC-494, MOD-RWN-PC-54, MOD-RWN-PC-64, MOD-RWN-PC-74, MOD-RWN-PC-84, MOD-RWN-PC-94, MOD-RWN-PC-114, MOD-RWN-PC-124, MOD-RWN-PC-134, MOD-RWN-PC-144, MOD-RWN-PC-154, MOD-RWN-PC-164, MOD-RWN-PC-174, MOD-RWN-PC-184, MOD-RWN-PC-194, MOD-RWN-PC-204, MOD-RWN-PC-214, MOD-RWN-PC-224, MOD-RWN-MH-24, MOD-RWN-MH-34, MOD-RWN-MH-44, MOD-RWN-MH-54, MOD-RWN-MH-64, MOD-RWN-MH-74, MOD-RWN-MH-84, MOD-RWN-MH-164, MOD-RWN-MH-174, MOD-RWN-MH-184, MOD-RWN-MH-194, MOD-RWN-MH-204, MOD-RWN-MH-214, MOD-RWN-MH-224, MOD-RWN-MH-104, MOD-RWN-MH-114, MOD-RWN-MH-124, MOD-RWN-MH-134, MOD-RWN-MH-144, MOD-RWN-MH-154, MOD-RWN-MH-94, MOD-RWN-CC-18, MOD-RWN-CC-28, MOD-RWN-CC-38, MOD-RWN-CC-48, MOD-RWN-CC-58, MOD-RWN-CC-108, MOD-RWN-CC-68, MOD-RWN-CC-78, MOD-RWN-CC-88, MOD-RWN-CC-98, MOD-RWN-CC-118, MOD-RWN-CC-128, MOD-RWN-CC-138, MOD-RWN-CC-148, MOD-RWN-CC-158, MOD-RWN-GO-11, MOD-RWN-GO-21, MOD-RWN-GO-31, MOD-RWN-GO-41, MOD-RWN-GO-51, MOD-RWN-GO-61, MOD-RWN-GO-71, MOD-RWN-GO-81, MOD-RWN-GO-91, MOD-RWN-BB-12, MOD-RWN-BB-22, MOD-RWN-BB-32, MOD-RWN-BB-42, MOD-RWN-BB-52, MOD-RWN-BB-102, MOD-RWN-BB-62, MOD-RWN-BB-72, MOD-RWN-BB-82, MOD-RWN-BB-92, MOD-RWN-PL-913, MOD-RWN-PL-923, MOD-RWN-PL-933, MOD-RWN-PL-943, MOD-RWN-PL-953, MOD-RWN-PL-963, MOD-RWN-PL-1003, MOD-RWN-PL-1013, MOD-RWN-PL-1073, MOD-RWN-PL-973, MOD-RWN-PL-983, MOD-RWN-PL-993, MOD-RWN-PL-1023, MOD-RWN-PL-1033, MOD-RWN-PL-1043, MOD-RWN-PL-1053, MOD-RWN-PL-1063, MOD-RWN-PL-1083, MOD-RWN-PC-002, MOD-RWN-PC-003, MOD-RWN-PC-004, MOD-RWN-PC-005, MOD-RWN-PC-006, MOD-RWN-PC-007, MOD-RWN-PC-008, MOD-RWN-PC-009, MOD-RWN-PC-010, MOD-RWN-PC-504, MOD-RWN-PC-514, MOD-RWN-PC-524, MOD-RWN-PC-012, MOD-RWN-PC-013, MOD-RWN-PC-014, MOD-RWN-PC-015, MOD-RWN-PC-016, MOD-RWN-PC-018, MOD-RWN-PC-019, MOD-RWN-PC-020, MOD-RWN-PC-021, MOD-RWN-PC-022, MOD-RWN-PC-023, MOD-RWN-PC-024, MOD-RWN-MH-002, MOD-RWN-MH-003, MOD-RWN-MH-004, MOD-RWN-MH-005, MOD-RWN-MH-006, MOD-RWN-MH-007, MOD-RWN-MH-008, MOD-RWN-MH-018, MOD-RWN-MH-019, MOD-RWN-MH-020, MOD-RWN-MH-021, MOD-RWN-MH-022, MOD-RWN-MH-023, MOD-RWN-MH-024, MOD-RWN-MH-010, MOD-RWN-MH-011, MOD-RWN-MH-012, MOD-RWN-MH-013, MOD-RWN-MH-014, MOD-RWN-MH-015, MOD-RWN-MH-016, MOD-RWN-CC-002, MOD-RWN-CC-003, MOD-RWN-CC-004, MOD-RWN-CC-005, MOD-RWN-CC-006, MOD-RWN-CC-008, MOD-RWN-CC-009, MOD-RWN-CC-010, MOD-RWN-CC-011, MOD-RWN-CC-012, MOD-RWN-CC-014, MOD-RWN-CC-015, MOD-RWN-CC-016, MOD-RWN-CC-017, MOD-RWN-CC-018, MOD-RWN-GO-002, MOD-RWN-GO-003, MOD-RWN-GO-004, MOD-RWN-GO-005, MOD-RWN-GO-006, MOD-RWN-GO-008, MOD-RWN-GO-009, MOD-RWN-GO-010, MOD-RWN-GO-011, MOD-RWN-BB-002, MOD-RWN-BB-003, MOD-RWN-BB-004, MOD-RWN-BB-005, MOD-RWN-BB-006, MOD-RWN-BB-008, MOD-RWN-BB-009, MOD-RWN-BB-010, MOD-RWN-BB-011, MOD-RWN-BB-012 | 0d | finish on or before 2026-01-18 |
| MIL-0007 |  | Completion of All Project Services | 0d | 2027-05-18 | 2027-05-18 | MOD-SWN-PW-265, MOD-SWN-PW-295, MOD-SWN-PW-305, MOD-SWN-PW-315, MOD-SWN-PW-325, MOD-SWN-PW-335, MOD-SWN-PW-275, MOD-SWN-PW-345, MOD-SWN-PW-355, MOD-SWN-PW-365, MOD-SWN-PW-375, MOD-SWN-PW-385, MOD-SWN-PW-285, MOD-SWN-PW-395, MOD-SWN-PW-405, MOD-SWN-PW-415, MOD-SWN-PW-425, MOD-SWN-PW-435, MOD-SWN-FV-55, MOD-SWN-FV-65, MOD-SWN-FV-75, MOD-SWN-FV-85, MOD-SWN-FV-95, MOD-SWN-PW-805, MOD-SWN-PW-815, MOD-SWN-PW-825, MOD-SWN-PW-835, MOD-SWN-VF-84, MOD-SWN-PW-845, MOD-SWN-PW-855, MOD-SWN-PW-865, MOD-SWN-PW-875, MOD-SWN-VF-94, MOD-SWN-PW-885, MOD-SWN-PW-895, MOD-SWN-PW-905, MOD-SWN-PW-915, MOD-SWN-VF-104, MOD-SWN-PW-925, MOD-SWN-PW-935, MOD-SWN-PW-945, MOD-SWN-PW-955, MOD-SWN-VF-114, MOD-SWN-MH-95, MOD-SWN-MH-185, MOD-SWN-PW-1605, MOD-SWN-PW-1615, MOD-SWN-PW-1625, MOD-SWN-PW-1635, MOD-SWN-MH-195, MOD-SWN-PW-1645, MOD-SWN-PW-1655, MOD-SWN-PW-1665, MOD-SWN-PW-1675, MOD-SWN-MH-205, MOD-SWN-PW-1685, MOD-SWN-PW-1695, MOD-SWN-PW-1705, MOD-SWN-PW-1715, MOD-SWN-MH-215, MOD-SWN-PW-1725, MOD-SWN-PW-1735, MOD-SWN-PW-1745, MOD-SWN-PW-1755, MOD-SWN-PS-1004, MOD-SWN-PS-1014, MOD-SWN-PS-984, MOD-SWN-PS-994, MOD-SWN-PS-644, MOD-SWN-PS-654, MOD-SWN-PS-1124, MOD-SWN-PS-1134, MOD-SWN-PS-1144, MOD-SWN-PS-1154, MOD-SWN-PS-674, MOD-SWN-PS-934, MOD-SWN-PS-944, MOD-SWN-PS-714, MOD-SWN-PS-724, MOD-SWN-PS-734, MOD-SWN-PS-754, MOD-SWN-PS-844, MOD-SWN-PS-854, MOD-SWN-PS-864, MOD-SWN-PS-874, MOD-SWN-PS-884, MOD-SWN-PS-894, MOD-SWN-PS-904, MOD-SWN-PS-954, MOD-SWN-PS-1024, MOD-SWN-PS-1034, MOD-SWN-PS-1044, MOD-SWN-PS-1054, MOD-SWN-PS-1064, MOD-SWN-PS-1074, MOD-SWN-PS-1084, MOD-SWN-PS-1094, MOD-SWN-PS-1104, MOD-RCP-ER-108, MOD-RCP-ER-118, MOD-RCP-ER-128, MOD-RCP-ER-138, MOD-RCP-ER-78, MOD-RCP-ER-88, MOD-RCP-ER-98, MOD-RCP-GS-123, MOD-RCP-GS-133, MOD-RCP-GS-183, MOD-RCP-GS-193, MOD-RCP-BW-55, MOD-RCP-BW-65, MOD-RCP-BW-75, MOD-RCP-BW-85, MOD-RCP-BW-95, MOD-RCP-GB-45, MOD-RCP-GB-55, MOD-RCP-GB-65, MOD-RCP-GB-75, MOD-RCP-CS-100, MOD-RCP-CS-110, MOD-RCP-CS-120, MOD-RCP-CS-130, MOD-RCP-CS-140, MOD-RCP-CS-150, MOD-RCP-CS-160, MOD-RCP-CS-170, MOD-RCP-CS-180, MOD-RCP-ED-108, MOD-RCP-ED-118, MOD-RCP-ED-128, MOD-RCP-ED-138, MOD-RCP-ED-78, MOD-RCP-ED-88, MOD-RCP-ED-98, MOD-ROC-PV-002, MOD-ROC-PV-003, MOD-ROC-PV-004, MOD-ROC-PV-005, MOD-ROC-PV-006, MOD-ROC-PV-007, MOD-ROC-PV-008, MOD-ROC-PV-009, MOD-ROC-PV-010, MOD-ROC-GR-002, MOD-ROC-GR-003, MOD-ROC-GR-004, MOD-ROC-GR-005, MOD-ROC-GR-006, MOD-ROC-GR-007, MOD-ROC-GR-008, MOD-ROC-GR-009, MOD-ROC-GR-010, MOD-SWN-PW-445, MOD-SWN-PW-475, MOD-SWN-PW-485, MOD-SWN-PW-495, MOD-SWN-PW-505, MOD-SWN-PW-515, MOD-SWN-PW-455, MOD-SWN-PW-525, MOD-SWN-PW-535, MOD-SWN-PW-545, MOD-SWN-PW-555, MOD-SWN-PW-565, MOD-SWN-PW-465, MOD-SWN-PW-575, MOD-SWN-PW-585, MOD-SWN-PW-595, MOD-SWN-PW-605, MOD-SWN-PW-615, MOD-SWN-FV-15, MOD-SWN-FV-25, MOD-SWN-FV-35, MOD-SWN-FV-45, MOD-SWN-FV-5, MOD-SWN-PW-965, MOD-SWN-PW-975, MOD-SWN-PW-985, MOD-SWN-PW-995, MOD-SWN-VF-124, MOD-SWN-PW-1005, MOD-SWN-PW-1015, MOD-SWN-PW-1025, MOD-SWN-PW-1035, MOD-SWN-VF-134, MOD-SWN-PW-1045, MOD-SWN-PW-1055, MOD-SWN-PW-1065, MOD-SWN-PW-1075, MOD-SWN-VF-144, MOD-SWN-PW-1085, MOD-SWN-PW-1095, MOD-SWN-PW-1105, MOD-SWN-PW-1115, MOD-SWN-VF-154, MOD-SWN-MH-45, MOD-SWN-MH-145, MOD-SWN-PW-1445, MOD-SWN-PW-1455, MOD-SWN-PW-1465, MOD-SWN-PW-1475, MOD-SWN-MH-155, MOD-SWN-PW-1485, MOD-SWN-PW-1495, MOD-SWN-PW-1505, MOD-SWN-PW-1515, MOD-SWN-MH-165, MOD-SWN-PW-1525, MOD-SWN-PW-1535, MOD-SWN-PW-1545, MOD-SWN-PW-1555, MOD-SWN-MH-175, MOD-SWN-PW-1565, MOD-SWN-PW-1575, MOD-SWN-PW-1585, MOD-SWN-PW-1595, MOD-RCP-ER-18, MOD-RCP-ER-28, MOD-RCP-ER-38, MOD-RCP-ER-48, MOD-RCP-ER-58, MOD-RCP-ER-68, MOD-RCP-ER-8, MOD-RCP-GS-43, MOD-RCP-GS-53, MOD-RCP-GS-83, MOD-RCP-GS-93, MOD-RCP-BW-15, MOD-RCP-BW-25, MOD-RCP-BW-35, MOD-RCP-BW-45, MOD-RCP-BW-5, MOD-RCP-GB-15, MOD-RCP-GB-25, MOD-RCP-GB-35, MOD-RCP-GB-5, MOD-RCP-CS-10, MOD-RCP-CS-20, MOD-RCP-CS-30, MOD-RCP-CS-40, MOD-RCP-CS-50, MOD-RCP-CS-60, MOD-RCP-CS-70, MOD-RCP-CS-80, MOD-RCP-CS-90, MOD-RCP-ED-18, MOD-RCP-ED-28, MOD-RCP-ED-38, MOD-RCP-ED-48, MOD-RCP-ED-58, MOD-RCP-ED-68, MOD-RCP-ED-8, MOD-ROC-PV-10, MOD-ROC-PV-20, MOD-ROC-PV-30, MOD-ROC-PV-40, MOD-ROC-PV-50, MOD-ROC-PV-60, MOD-ROC-PV-70, MOD-ROC-PV-80, MOD-ROC-PV-90, MOD-ROC-GR-10, MOD-ROC-GR-20, MOD-ROC-GR-30, MOD-ROC-GR-40, MOD-ROC-GR-50, MOD-ROC-GR-60, MOD-ROC-GR-70, MOD-ROC-GR-80, MOD-ROC-GR-90, MOD-SWN-PW-625, MOD-SWN-PW-655, MOD-SWN-PW-665, MOD-SWN-PW-675, MOD-SWN-PW-685, MOD-SWN-PW-695, MOD-SWN-PW-635, MOD-SWN-PW-705, MOD-SWN-PW-715, MOD-SWN-PW-725, MOD-SWN-PW-735, MOD-SWN-PW-745, MOD-SWN-PW-645, MOD-SWN-PW-755, MOD-SWN-PW-765, MOD-SWN-PW-775, MOD-SWN-PW-785, MOD-SWN-PW-795, MOD-SWN-FV-001, MOD-SWN-FV-002, MOD-SWN-FV-003, MOD-SWN-FV-004, MOD-SWN-FV-005, MOD-SWN-PW-1125, MOD-SWN-PW-1135, MOD-SWN-PW-1145, MOD-SWN-PW-1155, MOD-SWN-VF-164, MOD-SWN-PW-1165, MOD-SWN-PW-1175, MOD-SWN-PW-1185, MOD-SWN-PW-1195, MOD-SWN-VF-174, MOD-SWN-PW-1205, MOD-SWN-PW-1215, MOD-SWN-PW-1225, MOD-SWN-PW-1235, MOD-SWN-VF-184, MOD-SWN-PW-1245, MOD-SWN-PW-1255, MOD-SWN-PW-1265, MOD-SWN-PW-1275, MOD-SWN-VF-194, MOD-SWN-MH-005, MOD-SWN-MH-105, MOD-SWN-PW-1285, MOD-SWN-PW-1295, MOD-SWN-PW-1305, MOD-SWN-PW-1315, MOD-SWN-MH-115, MOD-SWN-PW-1325, MOD-SWN-PW-1335, MOD-SWN-PW-1345, MOD-SWN-PW-1355, MOD-SWN-MH-125, MOD-SWN-PW-1365, MOD-SWN-PW-1375, MOD-SWN-PW-1385, MOD-SWN-PW-1395, MOD-SWN-MH-135, MOD-SWN-PW-1405, MOD-SWN-PW-1415, MOD-SWN-PW-1425, MOD-SWN-PW-1435, MOD-SWN-PS-045, MOD-SWN-PS-046, MOD-SWN-PS-049, MOD-SWN-PS-050, MOD-SWN-PS-002, MOD-SWN-PS-003, MOD-SWN-PS-004, MOD-SWN-PS-0081, MOD-SWN-PS-0082, MOD-SWN-PS-010, MOD-SWN-PS-1164, MOD-SWN-PS-1174, MOD-SWN-PS-038, MOD-SWN-PS-039, MOD-SWN-PS-012, MOD-SWN-PS-013, MOD-SWN-PS-014, MOD-SWN-PS-019, MOD-SWN-PS-022, MOD-SWN-PS-023, MOD-SWN-PS-024, MOD-SWN-PS-025, MOD-SWN-PS-026, MOD-SWN-PS-027, MOD-SWN-PS-028, MOD-SWN-PS-029, MOD-SWN-PS-043, MOD-SWN-PS-052, MOD-SWN-PS-054, MOD-SWN-PS-055, MOD-SWN-PS-056, MOD-SWN-PS-058, MOD-SWN-PS-059, MOD-SWN-PS-061, MOD-SWN-PS-062, MOD-SWN-PS-064, MOD-IRN-EB-390, MOD-IRN-EB-400, MOD-IRN-EB-410, MOD-IRN-EB-420, MOD-IRN-EB-430, MOD-IRN-EB-440, MOD-IRN-VA-001, MOD-IRN-VA-002, MOD-IRN-VA-003, MOD-IRN-VA-004, MOD-IRN-VA-005, MOD-IRN-VR-001, MOD-IRN-VR-002, MOD-IRN-VR-003, MOD-IRN-VR-004, MOD-IRN-VR-005, MOD-IRN-VR-006, MOD-IRN-VR-007, MOD-IRN-WC-001, MOD-IRN-WC-002, MOD-IRN-WC-003, MOD-IRN-WC-004, MOD-IRN-WC-005, MOD-IRN-WC-006, MOD-IRN-AC-001, MOD-IRN-AC-002, MOD-IRN-AC-003, MOD-IRN-AC-004, MOD-IRN-AC-005, MOD-IRN-FC-001, MOD-IRN-FC-002, MOD-IRN-FC-003, MOD-IRN-FC-004, MOD-IRN-FC-005, MOD-IRN-FC-006, MOD-ROC-PV-100, MOD-ROC-PV-110, MOD-ROC-PV-120, MOD-ROC-PV-130, MOD-ROC-PV-140, MOD-ROC-PV-150, MOD-ROC-PV-160, MOD-ROC-PV-170, MOD-ROC-PV-180, MOD-ROC-GR-100, MOD-ROC-GR-110, MOD-ROC-GR-120, MOD-ROC-GR-130, MOD-ROC-GR-140, MOD-ROC-GR-150, MOD-ROC-GR-160, MOD-ROC-GR-170, MOD-ROC-GR-180, MOD-LOR-BC-002, MOD-LOR-BC-003, MOD-LOR-BC-005, MOD-LOR-BC-007, MOD-LOR-BC-008, MOD-LOR-PC-001, MOD-LOR-PC-002, MOD-LOR-PC-003, MOD-LOR-PC-004, MOD-LOR-PC-005, MOD-ARR-EW-001, MOD-ARR-EW-002, MOD-ARR-PC-001, MOD-ARR-PC-002, MOD-ARR-PC-003, MOD-ARR-PC-004, MOD-ARR-PC-005, MOD-ARR-PC-006, MOD-COC-DW-002, MOD-COC-DW-003, MOD-COC-DW-004, MOD-COC-DW-005, MOD-COC-DW-007, MOD-COC-DW-008, MOD-COC-DW-009, MOD-COC-MH-001, MOD-COC-MH-002, MOD-COC-MH-003, MOD-COC-MH-004, MOD-LNS-PT-002, MOD-LNS-PT-003, MOD-LNS-PT-004, MOD-LNS-PT-005, MOD-LNS-PT-006, MOD-LNS-PT-007, MOD-LNS-PT-008, MOD-LNS-PT-009, MOD-LNS-PT-010, MOD-LNS-GL-002, MOD-LNS-GL-003, MOD-LNS-GL-004, MOD-LNS-GL-005, MOD-LNS-GL-006, MOD-LNS-GL-007, MOD-LNS-GL-008, MOD-LNS-LI-002, MOD-LNS-LI-003, MOD-LNS-LI-004, MOD-LNS-LI-005, MOD-LNS-LI-006, MOD-LNS-LI-007, MOD-LNS-LI-008, MOD-LNS-LI-009, MOD-RCP-AR-007, MOD-RCP-BW-005, MOD-RCP-CL-007, MOD-RCP-CS-010, MOD-RCP-GB-002, MOD-RCP-GB-003, MOD-RCP-GB-004, MOD-RCP-GB-005, MOD-RCP-CS-002, MOD-RCP-CS-003, MOD-RCP-CS-004, MOD-RCP-CS-005, MOD-RCP-CS-006, MOD-RCP-CS-007, MOD-RCP-CS-008, MOD-RCP-CS-009, MOD-RCP-CS-010 FF, MOD-RCP-ED-002, MOD-RCP-ED-003, MOD-RCP-ED-004, MOD-RCP-ED-005, MOD-RCP-ED-006, MOD-RCP-ED-007, MOD-RCP-ED-008, MOD-RCP-CL-001, MOD-RCP-CL-002, MOD-RCP-CL-003, MOD-RCP-CL-004, MOD-RCP-CL-005, MOD-RCP-CL-006, MOD-RCP-CL-007 FF, MOD-RCP-AR-002, MOD-RCP-AR-003, MOD-RCP-AR-004, MOD-RCP-AR-005, MOD-RCP-AR-006, MOD-RCP-AR-007 FF, MOD-RCP-ER-008, MOD-RCP-ER-002, MOD-RCP-ER-003, MOD-RCP-ER-004, MOD-RCP-ER-005, MOD-RCP-ER-006, MOD-RCP-ER-007, MOD-RCP-GS-0042, MOD-RCP-GS-0043 | 0.75d | finish on or before 2027-05-18 |
| MIL-0008 |  | Final Handover | 0d | 2027-05-18 | 2027-05-18 | A102060, HO-0001, HO-0003, MIL-0002, MIL-0003, MIL-0004, MIL-0005, MIL-0006, MIL-0007, MOD-GEI-SF-001, MOD-GEI-PL-001, A103590, A103600, A103610, A102060 FF, A103620, A103630, HO-3, HO-13, HO-23, HO-33, HO-0001 FF, A103640, A103650, A103660, A103670, A103690, A103700, A103710, A103720, A103730 | 0d |  |
|  | 2 | **Mobilization** |  | 2025-05-19 | 2025-08-13 |  |  |  |
|  | 1 | **Mobilization** |  | 2025-05-19 | 2025-06-17 |  |  |  |
| A1070 |  | Mobilization of Manpower | 30d | 2025-05-19 | 2025-06-17 | MIL-0001 | 700d |  |
| A1080 |  | Mobilization of Equipment | 30d | 2025-05-19 | 2025-06-17 | MIL-0001 | 700d |  |
|  | 8 | **Deliverables** |  | 2025-05-19 | 2025-08-13 |  |  |  |
|  | 1 | **Submittals** |  | 2025-05-19 | 2025-08-02 |  |  |  |
| S10001 |  | Prepare & Submit Organization Chart | 15d | 2025-05-19 | 2025-06-04 | MIL-0001 | 179d |  |
| S100010 |  | Prepare & Submit Mobilization plan | 10d | 2025-05-19 | 2025-05-29 | MIL-0001 | 184d |  |
| S100011 |  | Prepare & Submit Interface management plan | 30d | 2025-05-19 | 2025-06-28 | MIL-0001 | 164d |  |
| S100012 |  | Prepare & Submit Document Control Plan | 15d | 2025-05-19 | 2025-06-04 | MIL-0001 | 179d |  |
| S100013 |  | Prepare & Submit Site Security Management Plan | 20d | 2025-05-19 | 2025-06-16 | MIL-0001 | 174d |  |
| S100014 |  | Prepare & Submit Emergency Response Plan | 20d | 2025-05-19 | 2025-06-16 | MIL-0001 | 174d |  |
| S100015 |  | Prepare & Submit Pre-commissioning/ Commissioning Plan/ Startup/ Testing / Handover Plan | 60d | 2025-05-19 | 2025-08-02 | MIL-0001 | 134d |  |
| S100016 |  | Prepare & Submit Operability and Maintainability Plan | 20d | 2025-05-19 | 2025-06-16 | MIL-0001 | 174d |  |
| S10002 |  | Prepare & Submit Method of Statement | 20d | 2025-05-19 | 2025-06-16 | MIL-0001 | 174d |  |
| S10003 |  | Prepare & Submit Quality plan | 20d | 2025-05-19 | 2025-06-16 | MIL-0001 | 174d |  |
| S10004 |  | Prepare & Submit Construction Environmental Management Plan (CEMP) | 25d | 2025-05-19 | 2025-06-22 | MIL-0001 | 169d |  |
| S10005 |  | Prepare & Submit Safety plan | 20d | 2025-05-19 | 2025-06-16 | MIL-0001 | 174d |  |
| S10006 |  | Prepare & Submit Contractual Project Time Schedule | 37d | 2025-05-19 | 2025-07-06 | MIL-0001 | 157d |  |
| S10007 |  | Prepare & Submit Performance Bond | 14d | 2025-05-19 | 2025-06-03 | MIL-0001 | 180d |  |
| S10008 |  | Prepare & Submit Insurance | 14d | 2025-05-19 | 2025-06-03 | MIL-0001 | 180d |  |
| S10009 |  | Prepare & Submit Procurement Plan | 30d | 2025-05-19 | 2025-06-28 | MIL-0001 | 164d |  |
|  | 2 | **Approvals** |  | 2025-05-31 | 2025-08-13 |  |  |  |
| S100036 |  | Approval of Mobilization plan | 10d | 2025-05-31 | 2025-06-16 | S100010 | 184d |  |
| S100156 |  | Approval of Performance Bond | 10d | 2025-06-04 | 2025-06-21 | S10007 | 180d |  |
| S100166 |  | Approval of Insurance | 10d | 2025-06-04 | 2025-06-21 | S10008 | 180d |  |
| S100026 |  | Approval of Organization Chart | 10d | 2025-06-11 | 2025-06-22 | S10001 | 179d |  |
| S100056 |  | Approval of Document Control Plan | 10d | 2025-06-11 | 2025-06-22 | S100012 | 179d |  |
| S100066 |  | Approval of Site Security Management Plan | 10d | 2025-06-17 | 2025-06-28 | S100013 | 174d |  |
| S100076 |  | Approval of Emergency Response Plan | 10d | 2025-06-17 | 2025-06-28 | S100014 | 174d |  |
| S100096 |  | Approval of Operability and Maintainability Plan | 10d | 2025-06-17 | 2025-06-28 | S100016 | 174d |  |
| S100106 |  | Approval of Method of Statement | 10d | 2025-06-17 | 2025-06-28 | S10002 | 174d |  |
| S100116 |  | Approval of Quality plan | 10d | 2025-06-17 | 2025-06-28 | S10003 | 174d |  |
| S100136 |  | Approval of Safety plan | 10d | 2025-06-17 | 2025-06-28 | S10005 | 174d |  |
| S100126 |  | Approval of Construction Environmental Management Plan (CEMP) | 10d | 2025-06-23 | 2025-07-03 | S10004 | 169d |  |
| S100046 |  | Approval of Interface management plan | 10d | 2025-06-29 | 2025-07-09 | S100011, S100011 FF | 164d |  |
| S100176 |  | Approval of Procurement Plan | 10d | 2025-06-29 | 2025-07-09 | S10009 | 164d |  |
| S100146 |  | Approval of Contractual Project Time Schedule | 10d | 2025-07-07 | 2025-07-17 | S10006 | 157d |  |
| S100086 |  | Approval of Pre-commissioning/ Commissioning Plan/ Startup/ Testing / Handover Plan | 10d | 2025-08-03 | 2025-08-13 | S100015 | 134d |  |
|  | 7 | **Engineering** |  | 2025-05-19 | 2026-11-08 |  |  |  |
|  | 3 | **Shop Drawing** |  | 2025-05-19 | 2025-07-16 |  |  |  |
|  | 1 | **Submittals** |  | 2025-05-19 | 2025-07-02 |  |  |  |
| A1550 |  | Earthworks details submittal | 33d | 2025-05-19 | 2025-07-02 | MIL-0001 | 67d |  |
| A1560 |  | Roadworks details submittal | 33d | 2025-05-19 | 2025-07-02 | MIL-0001 | 457.6d |  |
| A1580 |  | Landscape details submittal | 33d | 2025-05-19 | 2025-07-02 | MIL-0001 | 457.6d |  |
| A1590 |  | Electrical details submittal | 33d | 2025-05-19 | 2025-07-02 | MIL-0001 | 457.6d |  |
| A1620 |  | Mechanical details submittal | 33d | 2025-05-19 | 2025-07-02 | MIL-0001 | 97d |  |
|  | 2 | **Approvals** |  | 2025-07-03 | 2025-07-16 |  |  |  |
| A1600 |  | Earthworks details approval | 10d | 2025-07-03 | 2025-07-16 | A1550 | 67d |  |
| A1610 |  | Roadworks details approval | 10d | 2025-07-03 | 2025-07-16 | A1560 | 457.6d |  |
| A1630 |  | Landscape details approval | 10d | 2025-07-03 | 2025-07-16 | A1580 | 457.6d |  |
| A1640 |  | Electrical details approval | 10d | 2025-07-03 | 2025-07-16 | A1590 | 457.6d |  |
| A1650 |  | Mechanical details approval | 10d | 2025-07-03 | 2025-07-16 | A1620 | 97d |  |
|  | 1 | **Material Submittal & Approval** |  | 2025-06-22 | 2026-11-08 |  |  |  |
|  | 20 | **Long Lead Items** |  | 2025-06-22 | 2026-02-19 |  |  |  |
|  | 8 | **Pipes (DI / GRP) - For potable, irrigation, sewer, storm** |  | 2025-07-03 | 2025-07-28 |  |  |  |
| A1140 |  | Material Submittal for Pipes (DI / GRP) - For potable, irrigation, sewer, storm | 12d | 2025-07-03 | 2025-07-20 | A1139 SS, A1138, A1139 | 0.1d |  |
| A1150 |  | Material Approval for Pipes (DI / GRP) - For potable, irrigation, sewer, storm | 6d | 2025-07-21 | 2025-07-28 | A1140 | 0.1d |  |
|  | 2 | **Drainage Channel Covers (GRP / DI) - For storm and wastewater** |  | 2025-07-03 | 2025-08-05 |  |  |  |
| A102830 |  | Material Submittal for Drainage Channel Covers (GRP / DI) - For storm and wastewater | 17d | 2025-07-03 | 2025-07-27 | A103220 | 1d |  |
| A102840 |  | Material Approval for Drainage Channel Covers (GRP / DI) - For storm and wastewater | 7d | 2025-07-28 | 2025-08-05 | A102830 | 1d |  |

| ID | WBS | Task | Duration | Start | Finish | Predecessors | Total float |
| --- | --- | --- | --- | --- | --- | --- | --- |
|  | 4 | **Manholes (Precast / Cast in situ) - All networks** |  | 2025-07-03 | 2025-07-30 |  |  |
| A102850 |  | Material Submittal for Manholes (Precast / Cast in situ) - All networks | 13d | 2025-07-03 | 2025-07-21 | A103240 | 0d |
| A102860 |  | Material Approval for Manholes (Precast / Cast in situ) - All networks | 7d | 2025-07-22 | 2025-07-30 | A102850 | 0d |
|  | 3 | **Control & Instrumentation Devices - Flow meters, pressure sensors** |  | 2025-07-03 | 2025-07-30 |  |  |
| A102870 |  | Material Submittal for Control & Instrumentation Devices - Flow meters, pressure sensors | 13d | 2025-07-03 | 2025-07-21 | A103260 | 1d |
| A102880 |  | Material Approval for Control & Instrumentation Devices - Flow meters, pressure sensors | 7d | 2025-07-22 | 2025-07-30 | A102870 | 1d |
|  | 10 | **Pumps (Sewage, Irrigation, Booster) - Especially for pumping stations** |  | 2025-06-22 | 2025-07-17 |  |  |
| A102890 |  | Material Submittal for Pumps (Sewage, Irrigation, Booster) - Especially for pumping stations | 13d | 2025-06-22 | 2025-07-08 | A103270, A103280 SS | 0d |
| A102900 |  | Material Approval for Pumps (Sewage, Irrigation, Booster) - Especially for pumping stations | 7d | 2025-07-09 | 2025-07-17 | A102890 | 0d |
|  | 6 | **Lighting Poles & Fixtures - External works, Roads, PS** |  | 2025-07-03 | 2025-07-30 |  |  |
| A102910 |  | Material Submittal for Lighting Poles & Fixtures - External works, Roads, PS | 13d | 2025-07-03 | 2025-07-21 | A103300 | 0d |
| A102920 |  | Material Approval for Lighting Poles & Fixtures - External works, Roads, PS | 7d | 2025-07-22 | 2025-07-30 | A102910 | 0d |
|  | 13 | **Generators & Fuel Tanks - PS & Control Bldg backup power** |  | 2025-07-03 | 2025-07-30 |  |  |
| A102930 |  | Material Submittal for Generators & Fuel Tanks - PS & Control Bldg backup power | 13d | 2025-07-03 | 2025-07-21 | A103320 | 0d |
| A102940 |  | Material Approval for Generators & Fuel Tanks - PS & Control Bldg backup power | 7d | 2025-07-22 | 2025-07-30 | A102930 | 0d |
|  | 12 | **Cable Trays / Electrical Panels (MCC) - PS and Control Buildings** |  | 2026-01-22 | 2026-02-19 |  |  |
| A102950 |  | Material Submittal for Cable Trays / Electrical Panels (MCC) - PS and Control Buildings | 13d | 2026-01-22 | 2026-02-09 | A103340 | 36.8d |
| A102960 |  | Material Approval for Cable Trays / Electrical Panels (MCC) - PS and Control Buildings | 7d | 2026-02-10 | 2026-02-19 | A102950 | 36.8d |
|  | 11 | **Odor Control Units - Sewer PS-specific** |  | 2025-11-16 | 2025-12-11 |  |  |
| A102970 |  | Material Submittal for Odor Control Units - Sewer PS-specific | 13d | 2025-11-16 | 2025-12-02 | A103360 | 0d |
| A102980 |  | Material Approval for Odor Control Units - Sewer PS-specific | 7d | 2025-12-03 | 2025-12-11 | A102970 | 0d |
|  | 21 | **Short Lead Items** |  | 2025-07-03 | 2026-11-08 |  |  |
|  | 1 | **Asphalt** |  | 2026-10-11 | 2026-11-08 |  |  |
| A102990 |  | Material Submittal for Asphalt | 13d | 2026-10-11 | 2026-10-28 | A103380 | 17d |
| A103000 |  | Material Approval for Asphalt | 7d | 2026-10-28 | 2026-11-08 | A102990 | 17d |
|  | 8 | **Pipes (HDPE / uPVC) - For potable, irrigation, sewer, storm** |  | 2025-07-03 | 2025-07-30 |  |  |
| A103010 |  | Material Submittal for Pipes (HDPE / uPVC) - For potable, irrigation, sewer, storm | 13d | 2025-07-03 | 2025-07-21 | A103400 | 11d |
| A103020 |  | Material Approval for Pipes (HDPE / uPVC) - For potable, irrigation, sewer, storm | 7d | 2025-07-22 | 2025-07-30 | A103010 | 11d |
|  | 9 | **Valves (Gate, Air, NRV, Flow Control) - All water & drainage systems** |  | 2025-07-03 | 2025-07-30 |  |  |
| A103030 |  | Material Submittal for Valves (Gate, Air, NRV, Flow Control) - All water & drainage systems | 13d | 2025-07-03 | 2025-07-21 | A103420 | 0d |
| A103040 |  | Material Approval for Valves (Gate, Air, NRV, Flow Control) - All water & drainage systems | 7d | 2025-07-22 | 2025-07-30 | A103030 | 0d |
|  | 5 | **Chambers (Valve / Flowmeter / Washout) - Sewer, Potable, Irrigation** |  | 2025-07-03 | 2025-07-30 |  |  |
| A103050 |  | Material Submittal for Chambers (Valve / Flowmeter / Washout) - Sewer, Potable, Irrigation | 13d | 2025-07-03 | 2025-07-21 | A103440 | 15d |
| A103060 |  | Material Approval for Chambers (Valve / Flowmeter / Washout) - Sewer, Potable, Irrigation | 7d | 2025-07-22 | 2025-07-30 | A103050 | 15d |
|  | 7 | **Communication Ducts & Manholes - Telecom systems** |  | 2026-06-03 | 2026-07-01 |  |  |
| A103070 |  | Material Submittal for Communication Ducts & Manholes - Telecom systems | 13d | 2026-06-03 | 2026-06-22 | A103460 | 43d |
| A103080 |  | Material Approval for Communication Ducts & Manholes - Telecom systems | 7d | 2026-06-22 | 2026-07-01 | A103070 | 43d |
|  | 19 | **Air Vents / Washout Assemblies - Water networks** |  | 2025-07-03 | 2025-08-14 |  |  |
| A103090 |  | Material Submittal for Air Vents / Washout Assemblies - Water networks | 21d | 2025-07-03 | 2025-07-31 | A103480 | 8d |
| A103100 |  | Material Approval for Air Vents / Washout Assemblies - Water networks | 10d | 2025-08-03 | 2025-08-14 | A103090 | 8d |
|  | 14 | **Warning Tapes, Marker Posts - All underground works** |  | 2025-07-03 | 2025-07-30 |  |  |
| A103110 |  | Material Submittal for Warning Tapes, Marker Posts - All underground works | 13d | 2025-07-03 | 2025-07-21 | A103500 | 22d |
| A103120 |  | Material Approval for Warning Tapes, Marker Posts - All underground works | 7d | 2025-07-22 | 2025-07-30 | A103110 | 22d |
|  | 17 | **Concrete (for culverts, pads, plinths) - Structural support works** |  | 2025-07-03 | 2025-08-14 |  |  |
| A103130 |  | Material Submittal for Concrete (for culverts, pads, plinths) - Structural support works | 21d | 2025-07-03 | 2025-07-31 | A103520 | 5d |
| A103140 |  | Material Approval for Concrete (for culverts, pads, plinths) - Structural support works | 10d | 2025-08-03 | 2025-08-14 | A103130 | 5d |
|  | 18 | **Steel (Rebar, Gratings, Ladders, Covers) - Structural & drainage items** |  | 2025-07-03 | 2025-07-30 |  |  |
| A103150 |  | Material Submittal for Steel (Rebar, Gratings, Ladders, Covers) - Structural & drainage items | 13d | 2025-07-03 | 2025-07-21 | A103540 | 35d |
| A103160 |  | Material Approval for Steel (Rebar, Gratings, Ladders, Covers) - Structural & drainage items | 7d | 2025-07-22 | 2025-07-30 | A103150 | 35d |
|  | 15 | **Interlock Tiles / Curbstone - Roads, Sidewalks, Landscape** |  | 2026-02-01 | 2026-03-03 |  |  |
| A103170 |  | Material Submittal for Interlock Tiles / Curbstone - Roads, Sidewalks, Landscape | 13d | 2026-02-01 | 2026-02-18 | A103560 | 95.8d |
| A103180 |  | Material Approval for Interlock Tiles / Curbstone - Roads, Sidewalks, Landscape | 7d | 2026-02-18 | 2026-03-03 | A103170 | 95.8d |
|  | 16 | **Landscaping Materials (Soil, Plants) - Final works, softscape** |  | 2026-02-01 | 2026-03-03 |  |  |
| A103190 |  | Material Submittal for Landscaping Materials (Soil, Plants) - Final works, softscape | 13d | 2026-02-01 | 2026-02-18 | A103580 | 57.8d |
| A103200 |  | Material Approval for Landscaping Materials (Soil, Plants) - Final works, softscape | 7d | 2026-02-18 | 2026-03-03 | A103190 | 57.8d |
|  | 3 | **Procurement** |  | 2025-05-19 | 2027-01-25 |  |  |
|  | 1 | **Prequalification** |  | 2025-05-19 | 2026-10-11 |  |  |
|  | 20 | **Long Lead Items** |  | 2025-05-19 | 2026-01-21 |  |  |
|  | 8 | **Pipes (DI / GRP) - For potable, irrigation, sewer, storm** |  | 2025-05-19 | 2025-07-02 |  |  |
| A1138 |  | Prequalification Submittal for Pipes (DI / GRP) - For potable, irrigation, sewer, storm | 24d | 2025-05-19 | 2025-06-21 | MIL-0001, MIL-0001 SS | 0.1d |
| A1139 |  | Prequalification Approval for Pipes (DI / GRP) - For potable, irrigation, sewer, storm | 10d | 2025-06-22 | 2025-07-02 | A1138 | 0.1d |
|  | 2 | **Drainage Channel Covers (GRP / DI) - For storm and wastewater** |  | 2025-05-19 | 2025-07-02 |  |  |
| A103210 |  | Prequalification Submittal for Drainage Channel Covers (GRP / DI) - For storm and wastewater | 24d | 2025-05-19 | 2025-06-21 | MIL-0001 | 2d |
| A103220 |  | Prequalification Approval for Drainage Channel Covers (GRP / DI) - For storm and wastewater | 10d | 2025-06-22 | 2025-07-02 | A103210 | 2d |
|  | 4 | **Manholes (Precast / Cast in situ) - All networks** |  | 2025-05-19 | 2025-07-02 |  |  |
| A103230 |  | Prequalification Submittal for Manholes (Precast / Cast in situ) - All networks | 24d | 2025-05-19 | 2025-06-21 | MIL-0001 | 0d |
| A103240 |  | Prequalification Approval for Manholes (Precast / Cast in situ) - All networks | 10d | 2025-06-22 | 2025-07-02 | A103230 | 0d |
|  | 3 | **Control & Instrumentation Devices - Flow meters, pressure sensors** |  | 2025-05-19 | 2025-07-02 |  |  |
| A103250 |  | Prequalification Submittal for Control & Instrumentation Devices - Flow meters, pressure sensors | 24d | 2025-05-19 | 2025-06-21 | MIL-0001 | 2d |
| A103260 |  | Prequalification Approval for Control & Instrumentation Devices - Flow meters, pressure sensors | 10d | 2025-06-22 | 2025-07-02 | A103250 | 2d |

| ID | WBS | Task | Duration | Start | Finish | Predecessors | Total float |
| --- | --- | --- | --- | --- | --- | --- | --- |
|  | 10 | **Pumps (Sewage, Irrigation, Booster) - Especially for pumping stations** |  | 2025-05-19 | 2025-07-02 |  |  |
| A103270 |  | Prequalification Submittal for Pumps (Sewage, Irrigation, Booster) - Especially for pumping stations | 24d | 2025-05-19 | 2025-06-21 | MIL-0001 | 0d |
| A103280 |  | Prequalification Approval for Pumps (Sewage, Irrigation, Booster) - Especially for pumping stations | 10d | 2025-06-22 | 2025-07-02 | A103270 | 0d |
|  | 6 | **Lighting Poles & Fixtures - External works, Roads, PS** |  | 2025-05-19 | 2025-07-02 |  |  |
| A103290 |  | Prequalification Submittal for Lighting Poles & Fixtures - External works, Roads, PS | 24d | 2025-05-19 | 2025-06-21 | MIL-0001 | 0d |
| A103300 |  | Prequalification Approval for Lighting Poles & Fixtures - External works, Roads, PS | 10d | 2025-06-22 | 2025-07-02 | A103290 | 0d |
|  | 13 | **Generators & Fuel Tanks - PS & Control Bldg backup power** |  | 2025-05-19 | 2025-07-02 |  |  |
| A103310 |  | Prequalification Submittal for Generators & Fuel Tanks - PS & Control Bldg backup power | 24d | 2025-05-19 | 2025-06-21 | MIL-0001 | 0d |
| A103320 |  | Prequalification Approval for Generators & Fuel Tanks - PS & Control Bldg backup power | 10d | 2025-06-22 | 2025-07-02 | A103310 | 0d |
|  | 12 | **Cable Trays / Electrical Panels (MCC) - PS and Control Buildings** |  | 2025-12-14 | 2026-01-21 |  |  |
| A103330 |  | Prequalification Submittal for Cable Trays / Electrical Panels (MCC) - PS and Control Buildings | 24d | 2025-12-14 | 2026-01-10 | MIL-0001, A102680 | 37.8d |
| A103340 |  | Prequalification Approval for Cable Trays / Electrical Panels (MCC) - PS and Control Buildings | 10d | 2026-01-11 | 2026-01-21 | A103330 | 37.8d |
|  | 11 | **Odor Control Units - Sewer PS-specific** |  | 2025-10-09 | 2025-11-13 |  |  |
| A103350 |  | Prequalification Submittal for Odor Control Units - Sewer PS-specific | 21d | 2025-10-09 | 2025-11-02 | MIL-0001, A102230 | 1d |
| A103360 |  | Prequalification Approval for Odor Control Units - Sewer PS-specific | 10d | 2025-11-03 | 2025-11-13 | A103350 | 1d |
|  | 21 | **Short Lead Items** |  | 2025-05-19 | 2026-10-11 |  |  |
|  | 1 | **Asphalt** |  | 2026-08-31 | 2026-10-11 |  |  |
| A103370 |  | Prequalification Submittal for Asphalt | 24d | 2026-08-31 | 2026-09-29 | MIL-0001, A102720 | 20d |
| A103380 |  | Prequalification Approval for Asphalt | 10d | 2026-09-29 | 2026-10-11 | A103370 | 20d |
|  | 8 | **Pipes (HDPE / uPVC) - For potable, irrigation, sewer, storm** |  | 2025-05-19 | 2025-07-02 |  |  |
| A103390 |  | Prequalification Submittal for Pipes (HDPE / uPVC) - For potable, irrigation, sewer, storm | 24d | 2025-05-19 | 2025-06-21 | MIL-0001 | 14d |
| A103400 |  | Prequalification Approval for Pipes (HDPE / uPVC) - For potable, irrigation, sewer, storm | 10d | 2025-06-22 | 2025-07-02 | A103390 | 14d |
|  | 9 | **Valves (Gate, Air, NRV, Flow Control) - All water & drainage systems** |  | 2025-05-19 | 2025-07-02 |  |  |
| A103410 |  | Prequalification Submittal for Valves (Gate, Air, NRV, Flow Control) - All water & drainage systems | 24d | 2025-05-19 | 2025-06-21 | MIL-0001 | 0d |
| A103420 |  | Prequalification Approval for Valves (Gate, Air, NRV, Flow Control) - All water & drainage systems | 10d | 2025-06-22 | 2025-07-02 | A103410 | 0d |
|  | 5 | **Chambers (Valve / Flowmeter / Washout) - Sewer, Potable, Irrigation** |  | 2025-05-19 | 2025-07-02 |  |  |
| A103430 |  | Prequalification Submittal for Chambers (Valve / Flowmeter / Washout) - Sewer, Potable, Irrigation | 24d | 2025-05-19 | 2025-06-21 | MIL-0001 | 18d |
| A103440 |  | Prequalification Approval for Chambers (Valve / Flowmeter / Washout) - Sewer, Potable, Irrigation | 10d | 2025-06-22 | 2025-07-02 | A103430 | 18d |
|  | 7 | **Communication Ducts & Manholes - Telecom systems** |  | 2026-04-20 | 2026-06-03 |  |  |
| A103450 |  | Prequalification Submittal for Communication Ducts & Manholes - Telecom systems | 24d | 2026-04-20 | 2026-05-18 | MIL-0001, A102130 | 52d |
| A103460 |  | Prequalification Approval for Communication Ducts & Manholes - Telecom systems | 10d | 2026-05-18 | 2026-06-03 | A103450 | 52d |
|  | 19 | **Air Vents / Washout Assemblies - Water networks** |  | 2025-05-19 | 2025-07-02 |  |  |
| A103470 |  | Prequalification Submittal for Air Vents / Washout Assemblies - Water networks | 24d | 2025-05-19 | 2025-06-21 | MIL-0001 | 10d |
| A103480 |  | Prequalification Approval for Air Vents / Washout Assemblies - Water networks | 10d | 2025-06-22 | 2025-07-02 | A103470 | 10d |
|  | 14 | **Warning Tapes, Marker Posts - All underground works** |  | 2025-05-19 | 2025-07-02 |  |  |
| A103490 |  | Prequalification Submittal for Warning Tapes, Marker Posts - All underground works | 24d | 2025-05-19 | 2025-06-21 | MIL-0001 | 27d |
| A103500 |  | Prequalification Approval for Warning Tapes, Marker Posts - All underground works | 10d | 2025-06-22 | 2025-07-02 | A103490 | 27d |
|  | 17 | **Concrete (for culverts, pads, plinths) - Structural support works** |  | 2025-05-19 | 2025-07-02 |  |  |
| A103510 |  | Prequalification Submittal for Concrete (for culverts, pads, plinths) - Structural support works | 24d | 2025-05-19 | 2025-06-21 | MIL-0001 | 6d |
| A103520 |  | Prequalification Approval for Concrete (for culverts, pads, plinths) - Structural support works | 10d | 2025-06-22 | 2025-07-02 | A103510 | 6d |
|  | 18 | **Steel (Rebar, Gratings, Ladders, Covers) - Structural & drainage items** |  | 2025-05-19 | 2025-07-02 |  |  |
| A103530 |  | Prequalification Submittal for Steel (Rebar, Gratings, Ladders, Covers) - Structural & drainage items | 24d | 2025-05-19 | 2025-06-21 | MIL-0001 | 42d |
| A103540 |  | Prequalification Approval for Steel (Rebar, Gratings, Ladders, Covers) - Structural & drainage items | 10d | 2025-06-22 | 2025-07-02 | A103530 | 42d |
|  | 15 | **Interlock Tiles / Curbstone - Roads, Sidewalks, Landscape** |  | 2025-12-22 | 2026-01-29 |  |  |
| A103550 |  | Prequalification Submittal for Interlock Tiles / Curbstone - Roads, Sidewalks, Landscape | 24d | 2025-12-22 | 2026-01-18 | MIL-0001, A102780 | 108.8d |
| A103560 |  | Prequalification Approval for Interlock Tiles / Curbstone - Roads, Sidewalks, Landscape | 10d | 2026-01-19 | 2026-01-29 | A103550 | 108.8d |
|  | 16 | **Landscaping Materials (Soil, Plants) - Final works, softscape** |  | 2025-12-22 | 2026-01-29 |  |  |
| A103570 |  | Prequalification Submittal for Landscaping Materials (Soil, Plants) - Final works, softscape | 24d | 2025-12-22 | 2026-01-18 | MIL-0001, A102780 | 63.8d |
| A103580 |  | Prequalification Approval for Landscaping Materials (Soil, Plants) - Final works, softscape | 10d | 2026-01-19 | 2026-01-29 | A103570 | 63.8d |
|  | 20 | **Long Lead Items** |  | 2025-07-19 | 2026-11-07 |  |  |
|  | 8 | **Pipes (DI / GRP) - For potable, irrigation, sewer, storm** |  | 2025-07-29 | 2025-11-22 |  |  |
| A102480 |  | Issue PO for Pipes (DI / GRP) - For potable, irrigation, sewer, storm | 4d | 2025-07-29 | 2025-08-02 | A1150 | 0.1d |
| A102490 |  | Manufacturing for Pipes (DI / GRP) - For potable, irrigation, sewer, storm | 30d | 2025-08-03 | 2025-09-06 | A102480 | 0.1d |
| A102550 |  | Custom Clearance for Pipes (DI / GRP) - For potable, irrigation, sewer, storm | 5d | 2025-09-07 | 2025-09-11 | A102490 | 0.1d |
| A102500 |  | Delivery for Pipes (DI / GRP) - For potable, irrigation, sewer, storm | 30d | 2025-09-13 | 2025-10-18 | A102490, A102550 | 0.1d |
| A102560 |  | Staging Time for Pipes (DI / GRP) - For potable, irrigation, sewer, storm | 30d | 2025-10-19 | 2025-11-22 | A102500 | 308.2d |
|  | 2 | **Drainage Channel Covers (GRP / DI) - For storm and wastewater** |  | 2025-08-06 | 2026-01-04 |  |  |
| A1220 |  | Issue PO for Drainage Channel Covers (GRP / DI) - For storm and wastewater | 4d | 2025-08-06 | 2025-08-10 | A102840 | 1d |
| A1230 |  | Manufacturing for Drainage Channel Covers (GRP / DI) - For storm and wastewater | 60d | 2025-08-11 | 2025-10-20 | A1220 | 1d |
| A102570 |  | Custom Clearance for Drainage Channel Covers (GRP / DI) - For storm and wastewater | 10d | 2025-10-21 | 2025-11-01 | A1230 | 1d |
| A1240 |  | Delivery for Drainage Channel Covers (GRP / DI) - For storm and wastewater | 25d | 2025-11-02 | 2025-11-30 | A1230, A102570 | 1d |
| A102580 |  | Staging Time for Drainage Channel Covers (GRP / DI) - For storm and wastewater | 30d | 2025-12-01 | 2026-01-04 | A1240 | 1d |
|  | 4 | **Manholes (Precast / Cast in situ) - All networks** |  | 2025-07-31 | 2025-12-17 |  |  |
| A1460 |  | Issue PO for Manholes (Precast / Cast in situ) - All networks | 4d | 2025-07-31 | 2025-08-04 | A102860 | 0d |
| A1470 |  | Manufacturing for Manholes (Precast / Cast in situ) - All networks | 45d | 2025-08-05 | 2025-09-27 | A1460 | 0d |
| A102590 |  | Custom Clearance for Manholes (Precast / Cast in situ) - All networks | 10d | 2025-09-28 | 2025-10-08 | A1470 | 0d |
| A1480 |  | Delivery for Manholes (Precast / Cast in situ) - All networks | 30d | 2025-10-09 | 2025-11-12 | A1470, A102590 | 0d |
| A102600 |  | Staging Time for Manholes (Precast / Cast in situ) - All networks | 30d | 2025-11-13 | 2025-12-17 | A1480 | 0d |
|  | 3 | **Control & Instrumentation Devices - Flow meters, pressure sensors** |  | 2025-07-31 | 2025-12-17 |  |  |
| A1520 |  | Issue PO for Control & Instrumentation Devices - Flow meters, pressure sensors | 4d | 2025-07-31 | 2025-08-04 | A102880 | 1d |

| ID | WBS | Task | Duration | Start | Finish | Predecessors | Total float |
| --- | --- | --- | --- | --- | --- | --- | --- |
| A1530 |  | Manufacturing for Control & Instrumentation Devices - Flow meters, pressure sensors | 45d | 2025-08-05 | 2025-09-27 | A1520 | 1d |
| A102610 |  | Custom Clearance for Control & Instrumentation Devices - Flow meters, pressure sensors | 5d | 2025-09-28 | 2025-10-02 | A1530 | 1d |
| A1570 |  | Delivery for Control & Instrumentation Devices - Flow meters, pressure sensors | 35d | 2025-10-04 | 2025-11-12 | A1530, A102610 | 1d |
| A102620 |  | Staging Time for Control & Instrumentation Devices - Flow meters, pressure sensors | 30d | 2025-11-13 | 2025-12-17 | A1570 | 1d |
|  | 10 | **Pumps (Sewage, Irrigation, Booster) - Especially for pumping stations** |  | 2025-07-19 | 2025-12-16 |  |  |
| A102140 |  | Issue PO for Pumps (Sewage, Irrigation, Booster) - Especially for pumping stations | 4d | 2025-07-19 | 2025-07-22 | A102900 | 0d |
| A102150 |  | Manufacturing for Pumps (Sewage, Irrigation, Booster) - Especially for pumping stations | 45d | 2025-07-23 | 2025-09-13 | A102140 | 0d |
| A102630 |  | Custom Clearance for Pumps (Sewage, Irrigation, Booster) - Especially for pumping stations | 5d | 2025-09-14 | 2025-09-18 | A102150 | 0d |
| A102170 |  | Delivery for Pumps (Sewage, Irrigation, Booster) - Especially for pumping stations | 45d | 2025-09-20 | 2025-11-11 | A102150, A102630 | 0d |
| A102640 |  | Staging Time for Pumps (Sewage, Irrigation, Booster) - Especially for pumping stations | 30d | 2025-11-12 | 2025-12-16 | A102170 | 0d |
|  | 6 | **Lighting Poles & Fixtures - External works, Roads, PS** |  | 2025-07-31 | 2025-12-23 |  |  |
| A1400 |  | Issue PO for Lighting Poles & Fixtures - External works, Roads, PS | 4d | 2025-07-31 | 2025-08-04 | A102920 | 0d |
| A1410 |  | Manufacturing for Lighting Poles & Fixtures - External works, Roads, PS | 60d | 2025-08-05 | 2025-10-14 | A1400 | 0d |
| A102650 |  | Custom Clearance for Lighting Poles & Fixtures - External works, Roads, PS | 5d | 2025-10-15 | 2025-10-20 | A1410 | 0d |
| A1420 |  | Delivery for Lighting Poles & Fixtures - External works, Roads, PS | 25d | 2025-10-21 | 2025-11-18 | A1410, A102650 | 0d |
| A102660 |  | Staging Time for Lighting Poles & Fixtures - External works, Roads, PS | 30d | 2025-11-19 | 2025-12-23 | A1420 | 0d |
|  | 13 | **Generators & Fuel Tanks - PS & Control Bldg backup power** |  | 2025-07-31 | 2025-12-13 |  |  |
| A102220 |  | Issue PO for Generators & Fuel Tanks - PS & Control Bldg backup power | 4d | 2025-07-31 | 2025-08-04 | A102940 | 0d |
| A102230 |  | Manufacturing for Generators & Fuel Tanks - PS & Control Bldg backup power | 55d | 2025-08-05 | 2025-10-08 | A102220 | 0d |
| A102670 |  | Custom Clearance for Generators & Fuel Tanks - PS & Control Bldg backup power | 5d | 2025-10-09 | 2025-10-14 | A102230 | 0d |
| A102250 |  | Delivery for Generators & Fuel Tanks - PS & Control Bldg backup power | 21d | 2025-10-15 | 2025-11-08 | A102230, A102670 | 0d |
| A102680 |  | Staging Time for Generators & Fuel Tanks - PS & Control Bldg backup power | 30d | 2025-11-09 | 2025-12-13 | A102250 | 0d |
|  | 12 | **Cable Trays / Electrical Panels (MCC) - PS and Control Buildings** |  | 2026-02-19 | 2026-11-07 |  |  |
| A102200 |  | Issue PO for Cable Trays / Electrical Panels (MCC) - PS and Control Buildings | 4d | 2026-02-19 | 2026-03-01 | A102680, A102960 | 38.6d |
| A102210 |  | Manufacturing for Cable Trays / Electrical Panels (MCC) - PS and Control Buildings | 90d | 2026-03-01 | 2026-06-30 | A102200 | 38.6d |
| A102690 |  | Custom Clearance for Cable Trays / Electrical Panels (MCC) - PS and Control Buildings | 20d | 2026-07-01 | 2026-07-23 | A102210 | 38.6d |
| A102240 |  | Delivery for Cable Trays / Electrical Panels (MCC) - PS and Control Buildings | 60d | 2026-07-25 | 2026-10-03 | A102210, A102690 | 38.6d |
| A102700 |  | Staging Time for Cable Trays / Electrical Panels (MCC) - PS and Control Buildings | 30d | 2026-10-04 | 2026-11-07 | A102240 | 38.6d |
|  | 11 | **Odor Control Units - Sewer PS-specific** |  | 2025-12-14 | 2026-08-31 |  |  |
| A102120 |  | Issue PO for Odor Control Units - Sewer PS-specific | 4d | 2025-12-14 | 2025-12-17 | A102680, A102980 | 0d |
| A102130 |  | Manufacturing for Odor Control Units - Sewer PS-specific | 90d | 2025-12-18 | 2026-04-20 | A102120 | 0d |
| A102710 |  | Custom Clearance for Odor Control Units - Sewer PS-specific | 20d | 2026-04-20 | 2026-05-13 | A102130 | 0d |
| A102180 |  | Delivery for Odor Control Units - Sewer PS-specific | 60d | 2026-05-13 | 2026-07-27 | A102130, A102710 | 0d |
| A102720 |  | Staging Time for Odor Control Units - Sewer PS-specific | 30d | 2026-07-27 | 2026-08-31 | A102180 | 0d |
|  | 21 | **Short Lead Items** |  | 2025-07-31 | 2027-01-25 |  |  |
|  | 1 | **Asphalt** |  | 2026-11-08 | 2027-01-25 |  |  |
| A1160 |  | Issue PO for Asphalt | 4d | 2026-11-08 | 2026-11-12 | A102720, A103000 | 20d |
| A102730 |  | Delivery for Asphalt Phase 1 | 21d | 2026-11-12 | 2026-12-07 | A1160 | 20d |
| A103740 |  | Delivery for Asphalt Phase 2 | 21d | 2026-12-07 | 2026-12-31 | A1160, A102730 | 20d |
| A103750 |  | Delivery for Asphalt Phase 3 | 21d | 2026-12-31 | 2027-01-25 | A1160, A103740 | 20d |
|  | 8 | **Pipes (HDPE / uPVC) - For potable, irrigation, sewer, storm** |  | 2025-07-31 | 2025-11-06 |  |  |
| A102100 |  | Issue PO for Pipes (HDPE / uPVC) - For potable, irrigation, sewer, storm | 4d | 2025-07-31 | 2025-08-04 | A103020 | 13.1d |
| A102110 |  | Manufacturing for Pipes (HDPE / uPVC) - For potable, irrigation, sewer, storm | 30d | 2025-08-05 | 2025-09-08 | A102100 | 13.1d |
| A102190 |  | Delivery for Pipes (HDPE / uPVC) - For potable, irrigation, sewer, storm | 20d | 2025-09-09 | 2025-10-02 | A102110 | 13.1d |
| A102740 |  | Staging Time for Pipes (HDPE / uPVC) - For potable, irrigation, sewer, storm | 30d | 2025-10-04 | 2025-11-06 | A102190 | 20d |
|  | 9 | **Valves (Gate, Air, NRV, Flow Control) - All water & drainage systems** |  | 2025-07-31 | 2025-12-06 |  |  |
| A102080 |  | Issue PO for Valves (Gate, Air, NRV, Flow Control) - All water & drainage systems | 4d | 2025-07-31 | 2025-08-04 | A103040 | 0d |
| A102090 |  | Manufacturing for Valves (Gate, Air, NRV, Flow Control) - All water & drainage systems | 60d | 2025-08-05 | 2025-10-14 | A102080 | 0d |
| A102160 |  | Delivery for Valves (Gate, Air, NRV, Flow Control) - All water & drainage systems | 15d | 2025-10-15 | 2025-11-01 | A102090 | 0d |
| A102750 |  | Staging Time for Valves (Gate, Air, NRV, Flow Control) - All water & drainage systems | 30d | 2025-11-02 | 2025-12-06 | A102160 | 0d |
|  | 5 | **Chambers (Valve / Flowmeter / Washout) - Sewer, Potable, Irrigation** |  | 2025-07-31 | 2025-11-18 |  |  |
| A101970 |  | Issue PO for Chambers (Valve / Flowmeter / Washout) - Sewer, Potable, Irrigation | 4d | 2025-07-31 | 2025-08-04 | A103060 | 18d |
| A101980 |  | Manufacturing for Chambers (Valve / Flowmeter / Washout) - Sewer, Potable, Irrigation | 30d | 2025-08-05 | 2025-09-08 | A101970 | 18d |
| A102030 |  | Delivery for Chambers (Valve / Flowmeter / Washout) - Sewer, Potable, Irrigation | 30d | 2025-09-09 | 2025-10-14 | A101980 | 18d |
| A102760 |  | Staging Time for Chambers (Valve / Flowmeter / Washout) - Sewer, Potable, Irrigation | 30d | 2025-10-15 | 2025-11-18 | A102030 | 18d |
|  | 7 | **Communication Ducts & Manholes - Telecom systems** |  | 2026-08-31 | 2027-01-06 |  |  |
| A101990 |  | Issue PO for Communication Ducts & Manholes - Telecom systems | 4d | 2026-08-31 | 2026-09-05 | A102680, A102130, A102720, A103080 | 0d |
| A102000 |  | Manufacturing for Communication Ducts & Manholes - Telecom systems | 45d | 2026-09-05 | 2026-10-28 | A101990 | 0d |
| A102050 |  | Delivery for Communication Ducts & Manholes - Telecom systems | 30d | 2026-10-28 | 2026-12-02 | A102000 | 0d |
| A102770 |  | Staging Time for Communication Ducts & Manholes - Telecom systems | 30d | 2026-12-02 | 2027-01-06 | A102050 | 0d |
|  | 19 | **Air Vents / Washout Assemblies - Water networks** |  | 2025-08-16 | 2025-12-21 |  |  |
| A102410 |  | Issue PO for Air Vents / Washout Assemblies - Water networks | 4d | 2025-08-16 | 2025-08-19 | A103100 | 10d |
| A102420 |  | Manufacturing for Air Vents / Washout Assemblies - Water networks | 45d | 2025-08-20 | 2025-10-12 | A102410 | 10d |
| A102460 |  | Delivery for Air Vents / Washout Assemblies - Water networks | 30d | 2025-10-13 | 2025-11-16 | A102420 | 10d |
| A102780 |  | Staging Time for Air Vents / Washout Assemblies - Water networks | 30d | 2025-11-17 | 2025-12-21 | A102460 | 10d |
|  | 14 | **Warning Tapes, Marker Posts - All underground works** |  | 2025-07-31 | 2025-10-26 |  |  |
| A102260 |  | Issue PO for Warning Tapes, Marker Posts - All underground works | 4d | 2025-07-31 | 2025-08-04 | A103120 | 27d |
| A102270 |  | Manufacturing for Warning Tapes, Marker Posts - All underground works | 19d | 2025-08-05 | 2025-08-26 | A102260 | 27d |
| A102320 |  | Delivery for Warning Tapes, Marker Posts - All underground works | 21d | 2025-08-27 | 2025-09-20 | A102270 | 27d |
| A102790 |  | Staging Time for Warning Tapes, Marker Posts - All underground works | 30d | 2025-09-21 | 2025-10-26 | A102320 | 27d |

| ID | WBS | Task | Duration | Start | Finish | Predecessors | Total float |
| --- | --- | --- | --- | --- | --- | --- | --- |
|  | 17 | **Concrete (for culverts, pads, plinths) - Structural support works** |  | 2025-08-16 | 2026-11-08 |  |  |
| A102280 |  | Issue PO for Concrete (for culverts, pads, plinths) - Structural support works | 4d | 2025-08-16 | 2025-08-19 | A103140 | 7d |
| A102340 |  | Delivery for Concrete (for culverts, pads, plinths) - Structural support works P1 | 30d | 2025-08-20 | 2025-09-24 | A102280 | 7d |
| A103760 |  | Delivery for Concrete (for culverts, pads, plinths) - Structural support works P2 | 30d | 2025-09-25 | 2025-10-29 | A102280, A102340 | 7d |
| A103770 |  | Delivery for Concrete (for culverts, pads, plinths) - Structural support works P3 | 30d | 2025-10-30 | 2025-12-03 | A102280, A103760 | 7d |
| A103780 |  | Delivery for Concrete (for culverts, pads, plinths) - Structural support works P4 | 30d | 2025-12-04 | 2026-01-07 | A102280, A103770 | 97d |
| A103790 |  | Delivery for Concrete (for culverts, pads, plinths) - Structural support works P5 | 30d | 2026-01-08 | 2026-02-11 | A102280, A103780 | 97d |
| A103800 |  | Delivery for Concrete (for culverts, pads, plinths) - Structural support works P6 | 30d | 2026-02-12 | 2026-04-06 | A102280, A103790 | 97d |
| A103810 |  | Delivery for Concrete (for culverts, pads, plinths) - Structural support works P7 | 30d | 2026-04-06 | 2026-05-11 | A102280, A103800 | 97d |
| A103820 |  | Delivery for Concrete (for culverts, pads, plinths) - Structural support works P8 | 30d | 2026-05-11 | 2026-06-20 | A102280, A103810 | 97d |
| A103830 |  | Delivery for Concrete (for culverts, pads, plinths) - Structural support works P9 | 30d | 2026-06-20 | 2026-07-25 | A102280, A103820 | 97d |
| A103840 |  | Delivery for Concrete (for culverts, pads, plinths) - Structural support works P10 | 30d | 2026-07-25 | 2026-08-29 | A102280, A103830 | 97d |
| A103850 |  | Delivery for Concrete (for culverts, pads, plinths) - Structural support works P11 | 30d | 2026-08-29 | 2026-10-04 | A102280, A103840 | 97d |
| A103860 |  | Delivery for Concrete (for culverts, pads, plinths) - Structural support works P12 | 30d | 2026-10-04 | 2026-11-08 | A102280, A103850 | 97d |
|  | 18 | **Steel (Rebar, Gratings, Ladders, Covers) - Structural & drainage items** |  | 2025-07-31 | 2025-10-12 |  |  |
| A102300 |  | Issue PO for Steel (Rebar, Gratings, Ladders, Covers) - Structural & drainage items | 4d | 2025-07-31 | 2025-08-04 | A103160 | 42d |
| A102310 |  | Manufacturing for Steel (Rebar, Gratings, Ladders, Covers) - Structural & drainage items | 21d | 2025-08-05 | 2025-08-28 | A102300 | 42d |
| A102330 |  | Delivery for Steel (Rebar, Gratings, Ladders, Covers) - Structural & drainage items | 7d | 2025-08-30 | 2025-09-06 | A102310 | 42d |
| A102810 |  | Staging Time for Steel (Rebar, Gratings, Ladders, Covers) - Structural & drainage items | 30d | 2025-09-07 | 2025-10-12 | A102330 | 42d |
|  | 15 | **Interlock Tiles / Curbstone - Roads, Sidewalks, Landscape** |  | 2026-03-03 | 2026-07-07 |  |  |
| A102370 |  | Issue PO for Interlock Tiles / Curbstone - Roads, Sidewalks, Landscape | 4d | 2026-03-03 | 2026-03-10 | A102790, A103180, A102780 | 111.4d |
| A102380 |  | Manufacturing for Interlock Tiles / Curbstone - Roads, Sidewalks, Landscape | 30d | 2026-03-11 | 2026-04-23 | A102370 | 111.4d |
| A102400 |  | Delivery for Interlock Tiles / Curbstone - Roads, Sidewalks, Landscape | 30d | 2026-04-23 | 2026-06-02 | A102380 | 111.4d |
| A102820 |  | Staging Time for Interlock Tiles / Curbstone - Roads, Sidewalks, Landscape | 30d | 2026-06-02 | 2026-07-07 | A102400 | 111.4d |
|  | 16 | **Landscaping Materials (Soil, Plants) - Final works, softscape** |  | 2026-03-03 | 2026-07-07 |  |  |
| A102350 |  | Issue PO for Landscaping Materials (Soil, Plants) - Final works, softscape | 4d | 2026-03-03 | 2026-03-10 | A102790, A103200, A102780 | 65.4d |
| A102360 |  | Manufacturing for Landscaping Materials (Soil, Plants) - Final works, softscape | 60d | 2026-03-11 | 2026-06-02 | A102350 | 65.4d |
| A102390 |  | Delivery for Landscaping Materials (Soil, Plants) - Final works, softscape | 30d | 2026-06-02 | 2026-07-07 | A102360 | 65.4d |
|  | 4 | **Construction** |  | 2025-05-19 | 2027-05-18 |  |  |
|  | 7 | **Zone 3** |  | 2025-10-13 | 2026-12-26 |  |  |
|  | 2 | **Sewerage Network Zone 3** |  | 2025-10-13 | 2026-12-26 |  |  |
|  | 3 | **Pipework: Supply, Installation, and Testing** |  | 2025-10-19 | 2026-01-27 |  |  |
|  | 1 | **UPVC Pipes Installation (150mm–315mm)** |  | 2025-10-19 | 2026-01-12 |  |  |
| MOD-SWN-PW-305 |  | Excavation and Trenching UPVC for Sewerage Network Zone 3 | 21d | 2025-10-19 | 2025-11-08 | A102500, A102190, A1600 | 424.6d |
| MOD-SWN-PW-315 |  | Lean Concrete / Bedding UPVC for Sewerage Network Zone 3 | 7d | 2025-11-09 | 2025-11-15 | MOD-SWN-PW-305 | 424.6d |
| MOD-SWN-PW-265 |  | UPVC Pipes Installation (150mm–315mm) UPVC for Sewerage Network Zone 3 | 13d | 2025-11-16 | 2025-11-28 | MOD-SWN-PW-305, MOD-SWN-PW-315, A1650 | 424.6d |
| MOD-SWN-PW-325 |  | Test (Pressure - Slope) UPVC for Sewerage Network Zone 3 | 15d | 2025-11-29 | 2025-12-13 | MOD-SWN-PW-265 | 438d |
| MOD-SWN-PW-335 |  | Coating / Wrapping UPVC for Sewerage Network Zone 3 | 15d | 2025-12-14 | 2025-12-28 | MOD-SWN-PW-325 | 438d |
| MOD-SWN-PW-295 |  | Backfilling & Warrning Tape UPVC for Sewerage Network Zone 3 | 15d | 2025-12-29 | 2026-01-12 | MOD-SWN-PW-285, MOD-SWN-PW-335, MOD-GEI-PL-001 | 438d |
|  | 2 | **GRP Pipes Installation (400mm–700mm)** |  | 2025-10-19 | 2026-01-27 |  |  |
| MOD-SWN-PW-355 |  | Excavation and Trenching GRP for Sewerage Network Zone 3 | 21d | 2025-10-19 | 2025-11-08 | A102500, A102190, A1600 | 424.6d |
| MOD-SWN-PW-365 |  | Lean Concrete / Bedding GRP for Sewerage Network Zone 3 | 7d | 2025-11-09 | 2025-11-15 | MOD-SWN-PW-355, MOD-SWN-PW-355 FF | 424.6d |
| MOD-SWN-PW-275 |  | GRP Pipes Installation (400mm–700mm) GRP for Sewerage Network Zone 3 | 21d | 2025-11-23 | 2025-12-13 | MOD-SWN-PW-265 SS, MOD-SWN-PW-365, A102560, A1650 | 417.6d |
| MOD-SWN-PW-375 |  | Test (Pressure - Slope) GRP for Sewerage Network Zone 3 | 15d | 2025-12-14 | 2025-12-28 | MOD-SWN-PW-275 | 423d |
| MOD-SWN-PW-385 |  | Coating / Wrapping GRP for Sewerage Network Zone 3 | 15d | 2025-12-29 | 2026-01-12 | MOD-SWN-PW-375, MOD-SWN-PW-375 FF | 423d |
| MOD-SWN-PW-345 |  | Backfilling & Warrning Tape GRP for Sewerage Network Zone 3 | 15d | 2026-01-13 | 2026-01-27 | MOD-SWN-PW-385, MOD-SWN-PW-385 FF, MOD-GEI-PL-001 | 423d |
|  | 3 | **HDPE Pressure Pipes Installation (250mm–630mm)** |  | 2025-10-19 | 2026-01-27 |  |  |
| MOD-SWN-PW-405 |  | Excavation and Trenching HDPE for Sewerage Network Zone 3 | 21d | 2025-10-19 | 2025-11-08 | A102500, A102190, A1600 | 424.6d |
| MOD-SWN-PW-415 |  | Lean Concrete / Bedding HDPE for Sewerage Network Zone 3 | 7d | 2025-11-09 | 2025-11-15 | MOD-SWN-PW-405, MOD-SWN-PW-405 FF | 424.6d |
| MOD-SWN-PW-285 |  | HDPE Pressure Pipes Installation (250mm–630mm) HDPE for Sewerage Network Zone 3 | 21d | 2025-11-23 | 2025-12-13 | MOD-SWN-PW-275 SS, MOD-SWN-PW-415, A1650 | 417.6d |
| MOD-SWN-PW-425 |  | Test (Pressure - Slope) HDPE for Sewerage Network Zone 3 | 15d | 2025-12-14 | 2025-12-28 | MOD-SWN-PW-285 | 423d |
| MOD-SWN-PW-435 |  | Coating / Wrapping HDPE for Sewerage Network Zone 3 | 15d | 2025-12-29 | 2026-01-12 | MOD-SWN-PW-425, MOD-SWN-PW-425 FF | 423d |
| MOD-SWN-PW-395 |  | Backfilling & Warrning Tape HDPE for Sewerage Network Zone 3 | 15d | 2026-01-13 | 2026-01-27 | MOD-SWN-PW-435, MOD-SWN-PW-435 FF, MOD-GEI-PL-001 | 423d |
|  | 4 | **Fittings and Valves** |  | 2025-12-14 | 2026-01-13 |  |  |
| MOD-SWN-FV-55 |  | Supply & Installation of HDPE Elbows for Sewerage Network Zone 3 | 6d | 2025-12-14 | 2025-12-20 | MOD-SWN-PW-285 | 337.8d |
| MOD-SWN-FV-65 |  | Gate Valves Installation for Sewerage Network Zone 3 | 4d | 2025-12-21 | 2025-12-24 | MOD-SWN-FV-55, A102750 | 337.8d |
| MOD-SWN-FV-75 |  | Drain Valves Installation for Sewerage Network Zone 3 | 4d | 2025-12-25 | 2025-12-29 | MOD-SWN-FV-65 | 337.8d |
| MOD-SWN-FV-85 |  | Air Breather & Air Release Valves Installation for Sewerage Network Zone 3 | 10d | 2025-12-30 | 2026-01-10 | MOD-SWN-FV-75, A102780 | 337.8d |
| MOD-SWN-FV-95 |  | Jointing & Piping Accessories Installation for Sewerage Network Zone 3 | 3d | 2026-01-11 | 2026-01-13 | MOD-SWN-FV-85 | 337.8d |
|  | 6 | **Valve & Flow Meter Chambers** |  | 2025-10-19 | 2026-02-10 |  |  |
|  | 1 | **Valve Chambers Construction** |  | 2025-10-19 | 2026-01-04 |  |  |
| MOD-SWN-PW-815 |  | Excavation Valve Chamber for Sewerage Network Zone 3 | 21d | 2025-10-19 | 2025-11-08 | A102500, A102190, A1600 | 409d |
| MOD-SWN-PW-825 |  | Lean Concrete / Bedding Valve Chamber for Sewerage Network Zone 3 | 21d | 2025-11-09 | 2025-11-29 | MOD-SWN-PW-815, MOD-SWN-PW-815 FF, MOD-SWN-PW-815 SS | 409d |
| MOD-SWN-VF-84 |  | Valve Chambers Construction Valve Chamber for Sewerage Network Zone 3 | 6d | 2025-11-30 | 2025-12-05 | MOD-SWN-PW-825 | 409d |
| MOD-SWN-PW-835 |  | Test Valve Chamber for Sewerage Network Zone 3 | 15d | 2025-12-06 | 2025-12-20 | MOD-SWN-VF-84 | 446d |
| MOD-SWN-PW-805 |  | Backfilling Valve Chamber for Sewerage Network Zone 3 | 15d | 2025-12-21 | 2026-01-04 | MOD-SWN-PW-835, MOD-GEI-PL-001 | 446d |
|  | 2 | **Water Drain Chambers Construction** |  | 2025-10-19 | 2026-01-23 |  |  |
| MOD-SWN-PW-855 |  | Excavation Water Drain Chamber for Sewerage Network Zone 3 | 21d | 2025-10-19 | 2025-11-08 | A102500, A102190, A1600 | 415d |
| MOD-SWN-PW-865 |  | Lean Concrete / Bedding Water Drain Chamber for Sewerage Network Zone 3 | 21d | 2025-11-09 | 2025-11-29 | MOD-SWN-PW-855, MOD-SWN-PW-855 FF, MOD-SWN-PW-855 SS | 415d |
| MOD-SWN-VF-94 |  | Water Drain Chambers Construction Water Drain Chamber for Sewerage Network Zone 3 | 19d | 2025-12-06 | 2025-12-24 | MOD-SWN-VF-84, MOD-SWN-PW-865 | 409d |

| ID | WBS | Task | Duration | Start | Finish | Predecessors | Total float |
| --- | --- | --- | --- | --- | --- | --- | --- |
| MOD-SWN-PW-875 |  | Test Water Drain Chamber for Sewerage Network Zone 3 | 15d | 2025-12-25 | 2026-01-08 | MOD-SWN-VF-94 | 427d |
| MOD-SWN-PW-845 |  | Backfilling Water Drain Chamber for Sewerage Network Zone 3 | 15d | 2026-01-09 | 2026-01-23 | MOD-SWN-PW-875, MOD-GEI-PL-001 | 427d |
|  | 3 | **Discharge Chambers Construction** |  | 2025-10-19 | 2026-02-05 |  |  |
| MOD-SWN-PW-895 |  | Excavation Discharge Chamber for Sewerage Network Zone 3 | 21d | 2025-10-19 | 2025-11-08 | A102500, A102190, A1600 | 434d |
| MOD-SWN-PW-905 |  | Lean Concrete / Bedding Discharge Chamber for Sewerage Network Zone 3 | 21d | 2025-11-09 | 2025-11-29 | MOD-SWN-PW-895, MOD-SWN-PW-895 FF, MOD-SWN-PW-895 SS | 434d |
| MOD-SWN-VF-104 |  | Discharge Chambers Construction Discharge Chamber for Sewerage Network Zone 3 | 13d | 2025-12-25 | 2026-01-06 | MOD-SWN-VF-94, MOD-SWN-PW-905 | 409d |
| MOD-SWN-PW-915 |  | Test Discharge Chamber for Sewerage Network Zone 3 | 15d | 2026-01-07 | 2026-01-21 | MOD-SWN-VF-104 | 414d |
| MOD-SWN-PW-885 |  | Backfilling Discharge Chamber for Sewerage Network Zone 3 | 15d | 2026-01-22 | 2026-02-05 | MOD-SWN-PW-915, MOD-GEI-PL-001 | 414d |
|  | 4 | **Flow Meter Chambers Construction** |  | 2025-10-19 | 2026-02-10 |  |  |
| MOD-SWN-PW-935 |  | Excavation Flow Meter Chamber for Sewerage Network Zone 3 | 21d | 2025-10-19 | 2025-11-08 | A102500, A102190, A1600 | 447d |
| MOD-SWN-PW-945 |  | Lean Concrete / Bedding Flow Meter Chamber for Sewerage Network Zone 3 | 21d | 2025-11-09 | 2025-11-29 | MOD-SWN-PW-935, MOD-SWN-PW-935 FF, MOD-SWN-PW-935 SS | 447d |
| MOD-SWN-VF-114 |  | Flow Meter Chambers Construction Flow Meter Chamber for Sewerage Network Zone 3 | 5d | 2026-01-07 | 2026-01-11 | MOD-SWN-VF-104, MOD-SWN-PW-945 | 409d |
| MOD-SWN-PW-955 |  | Test Flow Meter Chamber for Sewerage Network Zone 3 | 15d | 2026-01-12 | 2026-01-26 | MOD-SWN-VF-114 | 409d |
| MOD-SWN-PW-925 |  | Backfilling Flow Meter Chamber for Sewerage Network Zone 3 | 15d | 2026-01-27 | 2026-02-10 | MOD-SWN-PW-955, MOD-GEI-PL-001 | 409d |
|  | 7 | **Manholes** |  | 2025-10-19 | 2026-03-04 |  |  |
| MOD-SWN-MH-95 |  | Depth Variation for Manholes for Sewerage Network Zone 3 | 8d | 2025-12-18 | 2025-12-27 | A102600 | 352.8d |
|  | 1 | **1200mm GRP Manholes with Backdrop** |  | 2025-10-19 | 2026-01-19 |  |  |
| MOD-SWN-PW-1615 |  | Excavation 1.2m GRP for Sewerage Network Zone 3 | 21d | 2025-10-19 | 2025-11-08 | A102500, A102190, A1600 | 387d |
| MOD-SWN-PW-1625 |  | Lean Concrete / Bedding 1.2m GRP for Sewerage Network Zone 3 | 21d | 2025-11-09 | 2025-11-29 | MOD-SWN-PW-1615, MOD-SWN-PW-1615 FF, MOD-SWN-PW-1615 SS | 387d |
| MOD-SWN-MH-185 |  | 1200mm GRP Manholes with Backdrop 1.2m GRP for Sewerage Network Zone 3 | 21d | 2025-11-30 | 2025-12-20 | MOD-SWN-PW-1625 | 387d |
| MOD-SWN-PW-1635 |  | Test 1.2m GRP for Sewerage Network Zone 3 | 15d | 2025-12-21 | 2026-01-04 | MOD-SWN-MH-185 | 431d |
| MOD-SWN-PW-1605 |  | Backfilling 1.2m GRP for Sewerage Network Zone 3 | 15d | 2026-01-05 | 2026-01-19 | MOD-SWN-PW-1635, MOD-GEI-PL-001 | 431d |
|  | 2 | **1500mm GRP Manholes (Standard & Backdrop)** |  | 2025-10-19 | 2026-02-09 |  |  |
| MOD-SWN-PW-1655 |  | Excavation 1.5m GRP for Sewerage Network Zone 3 | 21d | 2025-10-19 | 2025-11-08 | A102500, A102190, A1600 | 408d |
| MOD-SWN-PW-1665 |  | Lean Concrete / Bedding 1.5m GRP for Sewerage Network Zone 3 | 21d | 2025-11-09 | 2025-11-29 | MOD-SWN-PW-1655, MOD-SWN-PW-1655 FF, MOD-SWN-PW-1655 SS | 408d |
| MOD-SWN-MH-195 |  | 1500mm GRP Manholes (Standard & Backdrop) 1.5m GRP for Sewerage Network Zone 3 | 21d | 2025-12-21 | 2026-01-10 | MOD-SWN-MH-185, MOD-SWN-PW-1665 | 387d |
| MOD-SWN-PW-1675 |  | Test 1.5m GRP for Sewerage Network Zone 3 | 15d | 2026-01-11 | 2026-01-25 | MOD-SWN-MH-195 | 410d |
| MOD-SWN-PW-1645 |  | Backfilling 1.5m GRP for Sewerage Network Zone 3 | 15d | 2026-01-26 | 2026-02-09 | MOD-SWN-PW-1675, MOD-GEI-PL-001 | 410d |
|  | 3 | **1800mm GRP Manholes (Standard & Backdrop)** |  | 2025-10-19 | 2026-02-26 |  |  |
| MOD-SWN-PW-1695 |  | Excavation 1.8m GRP for Sewerage Network Zone 3 | 21d | 2025-10-19 | 2025-11-08 | A102500, A102190, A1600 | 429d |
| MOD-SWN-PW-1705 |  | Lean Concrete / Bedding 1.8m GRP for Sewerage Network Zone 3 | 21d | 2025-11-09 | 2025-11-29 | MOD-SWN-PW-1695, MOD-SWN-PW-1695 FF, MOD-SWN-PW-1695 SS | 429d |
| MOD-SWN-MH-205 |  | 1800mm GRP Manholes (Standard & Backdrop) 1.8m GRP for Sewerage Network Zone 3 | 17d | 2026-01-11 | 2026-01-27 | MOD-SWN-MH-195, MOD-SWN-PW-1705 | 387d |
| MOD-SWN-PW-1715 |  | Test 1.8m GRP for Sewerage Network Zone 3 | 15d | 2026-01-28 | 2026-02-11 | MOD-SWN-MH-205 | 393d |
| MOD-SWN-PW-1685 |  | Backfilling 1.8m GRP for Sewerage Network Zone 3 | 15d | 2026-02-12 | 2026-02-26 | MOD-SWN-PW-1715, MOD-GEI-PL-001 | 393d |
|  | 4 | **2000mm GRP Manholes (Standard & Backdrop)** |  | 2025-10-19 | 2026-03-04 |  |  |
| MOD-SWN-PW-1735 |  | Excavation 2m GRP for Sewerage Network Zone 3 | 21d | 2025-10-19 | 2025-11-08 | A102500, A102190, A1600 | 446d |
| MOD-SWN-PW-1745 |  | Lean Concrete / Bedding 2m GRP for Sewerage Network Zone 3 | 21d | 2025-11-09 | 2025-11-29 | MOD-SWN-PW-1735, MOD-SWN-PW-1735 FF, MOD-SWN-PW-1735 SS | 446d |
| MOD-SWN-MH-215 |  | 2000mm GRP Manholes (Standard & Backdrop) 2m GRP for Sewerage Network Zone 3 | 6d | 2026-01-28 | 2026-02-02 | MOD-SWN-MH-205, MOD-SWN-PW-1745 | 387d |
| MOD-SWN-PW-1755 |  | Test 2m GRP for Sewerage Network Zone 3 | 15d | 2026-02-03 | 2026-02-17 | MOD-SWN-MH-215 | 387d |
| MOD-SWN-PW-1725 |  | Backfilling 2m GRP for Sewerage Network Zone 3 | 15d | 2026-02-18 | 2026-03-04 | MOD-SWN-PW-1755, MOD-GEI-PL-001 | 387d |
|  | 5 | **Pumping Stations** |  | 2025-10-13 | 2026-12-26 |  |  |
|  | 9 | **Perimeter Walls & Gates** |  | 2025-10-13 | 2025-12-11 |  |  |
| MOD-SWN-PS-984 |  | Perimeter wall – PS3 for Sewerage Network Zone 3 | 21d | 2025-10-13 | 2025-11-05 | A102810, A102340 | 231.8d |
| MOD-SWN-PS-994 |  | Perimeter wall – PS4 for Sewerage Network Zone 3 | 21d | 2025-11-06 | 2025-11-30 | MOD-SWN-PS-984, A102810, A103760 | 245.8d |
| MOD-SWN-PS-1004 |  | Main entrance gates – PS3 & PS4 for Sewerage Network Zone 3 | 10d | 2025-12-01 | 2025-12-11 | MOD-SWN-PS-994 | 314.8d |
| MOD-SWN-PS-1014 |  | Personal entrance gate – PS3 & PS4 for Sewerage Network Zone 3 | 4d | 2025-12-01 | 2025-12-04 | MOD-SWN-PS-1004 SS | 314.8d |
|  | 1 | **Sewage Pumps and MCC System** |  | 2026-11-08 | 2026-12-26 |  |  |
| MOD-SWN-PS-644 |  | Sewage pumps (2x30 l/s, 1x115 l/s) incl. MCC – PS3 for Sewerage Network Zone 3 | 21d | 2026-11-08 | 2026-12-01 | A102700, A102640 | 40.6d |
| MOD-SWN-PS-654 |  | Sewage pumps (2x100 l/s) incl. MCC – PS4 for Sewerage Network Zone 3 | 21d | 2026-12-02 | 2026-12-26 | MOD-SWN-PS-644, A102700, A102640 | 40.6d |
|  | 2 | **Odor Control System** |  | 2026-08-31 | 2026-10-25 |  |  |
| MOD-SWN-PS-1124 |  | Odor control system – All stations (PS3) for Sewerage Network Zone 3 | 23d | 2026-08-31 | 2026-09-28 | A102180, A102720 | 93.8d |
| MOD-SWN-PS-1134 |  | Odor control system – All stations (PS4) for Sewerage Network Zone 3 | 23d | 2026-09-28 | 2026-10-25 | MOD-SWN-PS-1124, A102180, A102720 | 93.8d |
|  | 3 | **In-Line Booster Stations** |  | 2025-12-01 | 2026-02-11 |  |  |
| MOD-SWN-PS-674 |  | In-Line Booster Stations - Civil Works for Sewerage Network Zone 3 | 21d | 2025-12-01 | 2025-12-24 | MOD-SWN-PS-994 | 291.8d |
| MOD-SWN-PS-1144 |  | In-Line Booster Stations - Mechanical Works for Sewerage Network Zone 3 | 21d | 2025-12-25 | 2026-01-18 | MOD-SWN-PS-674 | 291.8d |
| MOD-SWN-PS-1154 |  | In-Line Booster Stations - Electrical Works for Sewerage Network Zone 3 | 21d | 2026-01-19 | 2026-02-11 | MOD-SWN-PS-1144 | 291.8d |
|  | 7 | **Engine/Motor Control Center Buildings** |  | 2025-11-06 | 2025-12-08 |  |  |
| MOD-SWN-PS-934 |  | MCC Building – PS3 for Sewerage Network Zone 3 | 1d | 2025-11-06 | 2025-11-06 | MOD-SWN-PS-984 | 231.8d |
| MOD-SWN-PS-944 |  | MCC Building – PS4 for Sewerage Network Zone 3 | 7d | 2025-12-01 | 2025-12-08 | MOD-SWN-PS-934, MOD-SWN-PS-994 | 245.8d |
|  | 4 | **Valves and Fittings (General Supply & Installation)** |  | 2025-12-18 | 2025-12-27 |  |  |
| MOD-SWN-PS-714 |  | Valves, fittings, flow meters – PS3 for Sewerage Network Zone 3 | 2d | 2025-12-18 | 2025-12-20 | A102620, MOD-SWN-PS-934 | 196.8d |
| MOD-SWN-PS-724 |  | Valves, fittings, flow meters – PS4 for Sewerage Network Zone 3 | 3d | 2025-12-21 | 2025-12-23 | MOD-SWN-PS-714, A102620 | 196.8d |
| MOD-SWN-PS-734 |  | 35mm SS 316 mesh network – PS4 for Sewerage Network Zone 3 | 3d | 2025-12-24 | 2025-12-27 | MOD-SWN-PS-724 | 196.8d |
|  | 5 | **Tank with Canopy** |  | 2025-12-28 | 2026-01-10 |  |  |
| MOD-SWN-PS-754 |  | Tank with canopy (per specs/drawings) - PS4 for Sewerage Network Zone 3 | 12d | 2025-12-28 | 2026-01-10 | MOD-SWN-PS-734 | 196.8d |
|  | 6 | **Pump Well and Valve Chambers** |  | 2026-01-11 | 2026-05-14 |  |  |
| MOD-SWN-PS-844 |  | Pump well & valve chamber structure – PS3 (2 wells, 5x5m, 11m depth) for Sewerage Network Zone 3 | 21d | 2026-01-11 | 2026-02-03 | A102760, A102810, MOD-SWN-PS-754 | 196.8d |
| MOD-SWN-PS-884 |  | Pump well & valve chamber structure – PS4 (1 well, 4m, 11m depth) for Sewerage Network Zone 3 | 22d | 2026-02-04 | 2026-03-11 | MOD-SWN-PS-844, MOD-SWN-PS-944, A102760, A102810 | 196.8d |
| MOD-SWN-PS-894 |  | Valve chamber – PS4 for Sewerage Network Zone 3 | 21d | 2026-03-12 | 2026-04-13 | MOD-SWN-PS-884, A102760 | 196.8d |
| MOD-SWN-PS-854 |  | Concrete wall (5x5x1m) inside PS3 well for Sewerage Network Zone 3 | 4d | 2026-04-06 | 2026-04-11 | MOD-SWN-PS-844, MOD-SWN-PS-934, A102760, A103800, A103790 | 228.8d |

| ID | WBS | Task | Duration | Start | Finish | Predecessors | Total float |
| --- | --- | --- | --- | --- | --- | --- | --- |
| MOD-SWN-PS-864 |  | Valve chamber – PS3 for Sewerage Network Zone 3 | 20d | 2026-04-11 | 2026-05-04 | MOD-SWN-PS-854, A102760 | 228.8d |
| MOD-SWN-PS-904 |  | Flow meter chamber – PS4 for Sewerage Network Zone 3 | 13d | 2026-04-13 | 2026-04-28 | MOD-SWN-PS-894, A102760 | 196.8d |
| MOD-SWN-PS-874 |  | Flow meter chamber – PS3 for Sewerage Network Zone 3 | 9d | 2026-05-04 | 2026-05-14 | MOD-SWN-PS-864, A102760 | 228.8d |
|  | 8 | **Odor Control System Base/Plinth** |  | 2026-06-03 | 2026-06-10 |  |  |
| MOD-SWN-PS-954 |  | Concrete plinth below odor control – PS3 & PS4 for Sewerage Network Zone 3 | 6d | 2026-06-03 | 2026-06-10 | MOD-SWN-PS-1084, MOD-SWN-PS-904, A103790, A103810 | 196.8d |
|  | 10 | **Lighting Works** |  | 2026-06-10 | 2026-06-25 |  |  |
| MOD-SWN-PS-1024 |  | 250W Flood Light installation – PS3 & PS4 for Sewerage Network Zone 3 | 13d | 2026-06-10 | 2026-06-25 | MOD-SWN-PS-1054, MOD-SWN-PS-954 | 196.8d |
|  | 11 | **Duct Works** |  | 2026-04-28 | 2026-05-06 |  |  |
| MOD-SWN-PS-1034 |  | uPVC duct Track 1 – PS3 & PS4 for Sewerage Network Zone 3 | 1d | 2026-04-28 | 2026-04-29 | MOD-SWN-PS-904, A1650 | 196.8d |
| MOD-SWN-PS-1044 |  | uPVC duct Track 2 – PS3 & PS4 for Sewerage Network Zone 3 | 2d | 2026-04-29 | 2026-05-02 | MOD-SWN-PS-1034, A1650 | 196.8d |
| MOD-SWN-PS-1054 |  | uPVC duct Track 8 – PS3 & PS4 for Sewerage Network Zone 3 | 4d | 2026-05-02 | 2026-05-06 | MOD-SWN-PS-1044, A1650 | 196.8d |
|  | 12 | **Grounding Works** |  | 2026-05-06 | 2026-05-10 |  |  |
| MOD-SWN-PS-1064 |  | Grounding pit – PS3 & PS4 for Sewerage Network Zone 3 | 1d | 2026-05-06 | 2026-05-07 | MOD-SWN-PS-1054 | 196.8d |
| MOD-SWN-PS-1074 |  | 600x600 Cable pull pit – PS3 & PS4 for Sewerage Network Zone 3 | 2d | 2026-05-07 | 2026-05-10 | MOD-SWN-PS-1064 | 196.8d |
|  | 13 | **Landscaping / Interlocking Tiles** |  | 2026-05-10 | 2026-06-08 |  |  |
| MOD-SWN-PS-1084 |  | Building perimeter interlock tiles for Sewerage Network Zone 3 | 17d | 2026-05-10 | 2026-06-03 | MOD-SWN-PS-1014, MOD-SWN-PS-1074 | 196.8d |
| MOD-SWN-PS-1094 |  | Entrance road paving tiles for Sewerage Network Zone 3 | 4d | 2026-06-03 | 2026-06-08 | MOD-SWN-PS-1084 | 211.8d |
|  | 14 | **Pumping Station Internal Drainage Network** |  | 2026-05-10 | 2026-05-18 |  |  |
| MOD-SWN-PS-1104 |  | Internal surface drainage channels for Sewerage Network Zone 3 | 7d | 2026-05-10 | 2026-05-18 | MOD-SWN-PS-984, MOD-SWN-PS-994, MOD-SWN-PS-1074 | 225.8d |
|  | 14 | **Rainwater Drainage Network Zone 3** |  | 2025-10-19 | 2026-01-18 |  |  |
|  | 1 | **Pipe Laying Works** |  | 2025-10-19 | 2026-01-18 |  |  |
|  | 2 | **Supply & Installation of uPVC Pipes (250–300mm dia)** |  | 2025-10-19 | 2025-12-13 |  |  |
| MOD-RWN-PL-233 |  | Excavation to required depth UPVC for Rainwater Drainage Network Zone 3 | 21d | 2025-10-19 | 2025-11-08 | A102500, A102190, A1600 | 13d |
| MOD-RWN-PL-243 |  | Lean Concrete / Bedding UPVC for Rainwater Drainage Network Zone 3 | 5d | 2025-11-09 | 2025-11-13 | MOD-RWN-PL-233 | 13d |
| MOD-RWN-PL-253 |  | Laying of uPVC pipe UPVC for Rainwater Drainage Network Zone 3 | 19d | 2025-11-14 | 2025-12-02 | MOD-RWN-PL-243 | 13d |
| MOD-RWN-PL-283 |  | Test (Pressure-slope) UPVC for Rainwater Drainage Network Zone 3 | 3d | 2025-12-03 | 2025-12-05 | MOD-RWN-PL-253 | 13d |
| MOD-RWN-PL-263 |  | Coating / Wrapping UPVC for Rainwater Drainage Network Zone 3 | 2d | 2025-12-06 | 2025-12-07 | MOD-RWN-PL-283 | 42d |
| MOD-RWN-PL-293 |  | Backfilling & Warning Tape UPVC for Rainwater Drainage Network Zone 3 | 8d | 2025-12-06 | 2025-12-13 | MOD-RWN-PL-283, MOD-GEI-PL-001 | 36d |
|  | 3 | **Supply & Installation of GRP Pipes (350–800mm dia)** |  | 2025-10-19 | 2026-01-18 |  |  |
| MOD-RWN-PL-313 |  | Excavate short trench paths GRP for Rainwater Drainage Network Zone 3 | 21d | 2025-10-19 | 2025-11-08 | A102500, A102190 | 0d |
| MOD-RWN-PL-323 |  | Lean Concrete / bedding material GRP for Rainwater Drainage Network Zone 3 | 8d | 2025-11-09 | 2025-11-16 | MOD-RWN-PL-313 | 0d |
| MOD-RWN-PL-333 |  | Lay & connect GRP for Rainwater Drainage Network Zone 3 | 21d | 2025-11-17 | 2025-12-07 | MOD-RWN-PL-323 | 0d |
| MOD-RWN-PL-343 |  | Test (Pressure-slope) GRP for Rainwater Drainage Network Zone 3 | 11d | 2025-12-08 | 2025-12-18 | MOD-RWN-PL-333 | 0d |
| MOD-RWN-PL-344 |  | Coating / Wrapping GRP for Rainwater Drainage Network Zone 3 | 21d | 2025-12-19 | 2026-01-08 | MOD-RWN-PL-343 | 0d |
| MOD-RWN-PL-353 |  | Backfilling & compaction GRP for Rainwater Drainage Network Zone 3 | 10d | 2026-01-09 | 2026-01-18 | MOD-RWN-PL-343, MOD-RWN-PL-344, MOD-GEI-PL-001 | 0d |
|  | 4 | **uPVC Connection Pipes (150mm dia)** |  | 2025-10-19 | 2026-01-05 |  |  |
| MOD-RWN-PL-373 |  | Excavate short trench paths UPVC Con. for Rainwater Drainage Network Zone 3 | 5d | 2025-10-19 | 2025-10-23 | A102500, A102190 | 50d |
| MOD-RWN-PL-383 |  | Lean Concrete / bedding material UPVC Con. for Rainwater Drainage Network Zone 3 | 3d | 2025-10-24 | 2025-10-26 | MOD-RWN-PL-373 | 50d |
| MOD-RWN-PL-393 |  | Lay & connect UPVC Con. for Rainwater Drainage Network Zone 3 | 8d | 2025-12-03 | 2025-12-10 | MOD-RWN-PL-383, MOD-RWN-PL-283 SS | 13d |
| MOD-RWN-PL-403 |  | Test (Pressure-slope) UPVC Con. for Rainwater Drainage Network Zone 3 | 3d | 2025-12-11 | 2025-12-13 | MOD-RWN-PL-393 | 13d |
| MOD-RWN-PL-723 |  | Coating / Wrapping UPVC Con. for Rainwater Drainage Network Zone 3 | 21d | 2025-12-14 | 2026-01-03 | MOD-RWN-PL-403 | 13d |
| MOD-RWN-PL-413 |  | Backfilling & compaction UPVC Con. for Rainwater Drainage Network Zone 3 | 2d | 2026-01-04 | 2026-01-05 | MOD-RWN-PL-403, MOD-RWN-PL-723, MOD-GEI-PL-001 | 13d |
|  | 5 | **Precast Concrete Box Culverts** |  | 2025-10-19 | 2026-01-18 |  |  |
|  | 1 | **Box Culverts (500x500mm to 3500x800mm)** |  | 2025-10-19 | 2026-01-18 |  |  |
| MOD-RWN-PC-234 |  | Survey and layout alignment Box culvert for Rainwater Drainage Network Zone 3 | 3d | 2025-10-19 | 2025-10-22 | MOD-RWN-PL-313 SS | 0.9d |
| MOD-RWN-PC-444 |  | Setting Bench mark & levels Box culvert for Rainwater Drainage Network Zone 3 | 3d | 2025-10-22 | 2025-10-26 | MOD-RWN-PC-234 | 0.9d |
| MOD-RWN-PC-454 |  | Cleaning Box culvert for Rainwater Drainage Network Zone 3 | 4d | 2025-10-26 | 2025-10-30 | MOD-RWN-PC-444 | 0.9d |
| MOD-RWN-PC-464 |  | Testing Box culvert for Rainwater Drainage Network Zone 3 | 2d | 2025-10-30 | 2025-11-02 | MOD-RWN-PC-454 | 0.9d |
| MOD-RWN-PC-244 |  | Excavation to required depth Box culvert for Rainwater Drainage Network Zone 3 | 11d | 2025-11-02 | 2025-11-15 | MOD-RWN-PC-234, MOD-RWN-PC-464, A1600 | 0.9d |
| MOD-RWN-PC-254 |  | Dewatering and trench shoring Box culvert for Rainwater Drainage Network Zone 3 | 15d | 2025-11-15 | 2025-12-02 | MOD-RWN-PC-244 | 0.9d |
| MOD-RWN-PC-264 |  | Bedding preparation (gravel/lean concrete) Box culvert for Rainwater Drainage Network Zone 3 | 4d | 2025-12-02 | 2025-12-07 | MOD-RWN-PC-254 | 0.9d |
| MOD-RWN-PC-274 |  | Installation of box culvert units Box culvert for Rainwater Drainage Network Zone 3 | 10d | 2025-12-07 | 2025-12-18 | MOD-RWN-PC-264 | 0.9d |
| MOD-RWN-PC-284 |  | Alignment and joint sealing Box culvert for Rainwater Drainage Network Zone 3 | 4d | 2025-12-18 | 2025-12-23 | MOD-RWN-PC-274 | 0.9d |
| MOD-RWN-PC-294 |  | Construct headwalls/wing walls (if needed) Box culvert for Rainwater Drainage Network Zone 3 | 12d | 2025-12-23 | 2026-01-06 | MOD-RWN-PC-284, A102810 | 0.9d |
| MOD-RWN-PC-304 |  | Backfilling and compaction Box culvert for Rainwater Drainage Network Zone 3 | 7d | 2026-01-06 | 2026-01-14 | MOD-RWN-PC-294, MOD-GEI-PL-001 | 0.9d |
| MOD-RWN-PC-314 |  | Surface finishing Box culvert for Rainwater Drainage Network Zone 3 | 3d | 2026-01-14 | 2026-01-18 | MOD-RWN-PC-304 | 0.9d |
|  | 2 | **Tube Culverts at Road Intersections** |  | 2025-11-15 | 2026-01-07 |  |  |
| MOD-RWN-PC-324 |  | Traffic control setup Tube culvert for Rainwater Drainage Network Zone 3 | 2d | 2025-11-15 | 2025-11-17 | MOD-RWN-PC-244 | 9d |
| MOD-RWN-PC-334 |  | Trench excavation under road Tube culvert for Rainwater Drainage Network Zone 3 | 11d | 2025-11-17 | 2025-11-30 | MOD-RWN-PC-324, A102790 | 9d |
| MOD-RWN-PC-344 |  | Pipe bedding and twin pipe alignment Tube culvert for Rainwater Drainage Network Zone 3 | 6d | 2025-11-30 | 2025-12-07 | MOD-RWN-PC-334 | 9d |
| MOD-RWN-PC-354 |  | Pipe laying and jointing Tube culvert for Rainwater Drainage Network Zone 3 | 19d | 2025-12-07 | 2025-12-29 | MOD-RWN-PC-344, A102740, A1650 | 9d |
| MOD-RWN-PC-364 |  | Backfilling and road reinstatement Tube culvert for Rainwater Drainage Network Zone 3 | 8d | 2025-12-30 | 2026-01-07 | MOD-RWN-PC-354 FS+0.9d, MOD-GEI-PL-001 | 9d |
|  | 3 | **Box Culverts at Road Intersections** |  | 2025-11-17 | 2025-12-31 |  |  |
| MOD-RWN-PC-374 |  | Traffic diversion and barricading for Rainwater Drainage Network Zone 3 | 10d | 2025-11-17 | 2025-11-29 | MOD-RWN-PC-324 | 15.9d |
| MOD-RWN-PC-384 |  | Deep trench excavation with shoring for Rainwater Drainage Network Zone 3 | 1d | 2025-11-29 | 2025-11-30 | MOD-RWN-PC-374 | 15.9d |
| MOD-RWN-PC-394 |  | Place bedding material for Rainwater Drainage Network Zone 3 | 1d | 2025-11-30 | 2025-12-01 | MOD-RWN-PC-384 | 15.9d |
| MOD-RWN-PC-404 |  | Install precast box culvert for Rainwater Drainage Network Zone 3 | 4d | 2025-12-01 | 2025-12-06 | MOD-RWN-PC-394 | 15.9d |
| MOD-RWN-PC-414 |  | Construct connection chambers (if needed) for Rainwater Drainage Network Zone 3 | 1d | 2025-12-06 | 2025-12-07 | MOD-RWN-PC-404, A102810 | 15.9d |
| MOD-RWN-PC-424 |  | Joint treatment and testing for Rainwater Drainage Network Zone 3 | 12d | 2025-12-07 | 2025-12-21 | MOD-RWN-PC-414 | 15.9d |
| MOD-RWN-PC-434 |  | Backfilling and surface reinstatement for Rainwater Drainage Network Zone 3 | 9d | 2025-12-21 | 2025-12-31 | MOD-RWN-PC-424, MOD-GEI-PL-001 | 15.9d |

| ID | WBS | Task | Duration | Start | Finish | Predecessors | Total float |
| --- | --- | --- | --- | --- | --- | --- | --- |
|  | 4 | **Manholes** |  | 2025-12-07 | 2026-01-18 |  |  |
|  | 1 | **Circular GRP Manholes (1200–1800mm dia)** |  | 2025-12-07 | 2026-01-13 |  |  |
| MOD-RWN-MH-234 |  | Excavate to full manhole depth Circular Manhole for Rainwater Drainage Network Zone 3 | 7d | 2025-12-07 | 2025-12-15 | MOD-RWN-PC-274 SS | 4.9d |
| MOD-RWN-MH-244 |  | Dewatering and safety barriers Circular Manhole for Rainwater Drainage Network Zone 3 | 6d | 2025-12-15 | 2025-12-22 | MOD-RWN-MH-234 | 4.9d |
| MOD-RWN-MH-254 |  | Concrete base construction Circular Manhole for Rainwater Drainage Network Zone 3 | 2d | 2025-12-22 | 2025-12-24 | MOD-RWN-MH-244, A103770 | 4.9d |
| MOD-RWN-MH-264 |  | Install GRP manhole shaft sections Circular Manhole for Rainwater Drainage Network Zone 3 | 7d | 2025-12-24 | 2026-01-01 | MOD-RWN-MH-254, A102600 | 4.9d |
| MOD-RWN-MH-274 |  | Place slab and cover frame Circular Manhole for Rainwater Drainage Network Zone 3 | 6d | 2026-01-01 | 2026-01-08 | MOD-RWN-MH-264 | 4.9d |
| MOD-RWN-MH-284 |  | Waterproofing Circular Manhole for Rainwater Drainage Network Zone 3 | 2d | 2026-01-08 | 2026-01-11 | MOD-RWN-MH-274 | 4.9d |
| MOD-RWN-MH-294 |  | Backfilling and compaction Circular Manhole for Rainwater Drainage Network Zone 3 | 2d | 2026-01-11 | 2026-01-13 | MOD-RWN-MH-284, MOD-GEI-PL-001 | 4.9d |
|  | 3 | **Concrete Manholes for 1500x1500 Box Pipes** |  | 2025-12-07 | 2026-01-13 |  |  |
| MOD-RWN-MH-374 |  | Excavation Concrete Manhole 1.5x1.5 for Rainwater Drainage Network Zone 3 | 6d | 2025-12-07 | 2025-12-14 | MOD-RWN-PC-274 SS, A1600 | 4.9d |
| MOD-RWN-MH-384 |  | Base slab and wall shuttering Concrete Manhole 1.5x1.5 for Rainwater Drainage Network Zone 3 | 4d | 2025-12-14 | 2025-12-18 | MOD-RWN-MH-374 | 4.9d |
| MOD-RWN-MH-394 |  | Wall reinforcement and casting Concrete Manhole 1.5x1.5 for Rainwater Drainage Network Zone 3 | 8d | 2025-12-18 | 2025-12-28 | MOD-RWN-MH-384 | 4.9d |
| MOD-RWN-MH-404 |  | Roof slab with openings Concrete Manhole 1.5x1.5 for Rainwater Drainage Network Zone 3 | 4d | 2025-12-28 | 2026-01-01 | MOD-RWN-MH-394 | 4.9d |
| MOD-RWN-MH-414 |  | Masonry/benching works inside Concrete Manhole 1.5x1.5 for Rainwater Drainage Network Zone 3 | 5d | 2026-01-01 | 2026-01-07 | MOD-RWN-MH-404 | 4.9d |
| MOD-RWN-MH-424 |  | Install cover and frame Concrete Manhole 1.5x1.5 for Rainwater Drainage Network Zone 3 | 2d | 2026-01-07 | 2026-01-10 | MOD-RWN-MH-414, A102580 | 4.9d |
| MOD-RWN-MH-434 |  | Backfill in layers Concrete Manhole 1.5x1.5 for Rainwater Drainage Network Zone 3 | 3d | 2026-01-10 | 2026-01-13 | MOD-RWN-MH-424, MOD-GEI-PL-001 | 4.9d |
|  | 2 | **Concrete Manholes for 1000x1000 Box Pipes** |  | 2025-12-07 | 2026-01-18 |  |  |
| MOD-RWN-MH-304 |  | Excavation Concrete Manhole 1x1 for Rainwater Drainage Network Zone 3 | 6d | 2025-12-07 | 2025-12-14 | MOD-RWN-PC-274 SS, A1600 | 0.9d |
| MOD-RWN-MH-314 |  | Base slab and wall shuttering Concrete Manhole 1x1 for Rainwater Drainage Network Zone 3 | 4d | 2025-12-14 | 2025-12-18 | MOD-RWN-MH-304 | 0.9d |
| MOD-RWN-MH-324 |  | Wall reinforcement and casting Concrete Manhole 1x1 for Rainwater Drainage Network Zone 3 | 6d | 2025-12-18 | 2025-12-25 | MOD-RWN-MH-314 | 0.9d |
| MOD-RWN-MH-334 |  | Roof slab with openings Concrete Manhole 1x1 for Rainwater Drainage Network Zone 3 | 4d | 2025-12-25 | 2025-12-30 | MOD-RWN-MH-324 | 0.9d |
| MOD-RWN-MH-344 |  | Masonry/benching works inside Concrete Manhole 1x1 for Rainwater Drainage Network Zone 3 | 7d | 2025-12-30 | 2026-01-07 | MOD-RWN-MH-334 | 0.9d |
| MOD-RWN-MH-354 |  | Install cover and frame Concrete Manhole 1x1 for Rainwater Drainage Network Zone 3 | 4d | 2026-01-07 | 2026-01-12 | MOD-RWN-MH-344, A102580 | 0.9d |
| MOD-RWN-MH-364 |  | Backfill in layers Concrete Manhole 1x1 for Rainwater Drainage Network Zone 3 | 5d | 2026-01-12 | 2026-01-18 | MOD-RWN-MH-354, MOD-GEI-PL-001 | 0.9d |
|  | 2 | **Chambers and Catch Basins** |  | 2025-12-07 | 2026-01-17 |  |  |
|  | 1 | **Gully Outfalls** |  | 2025-12-07 | 2026-01-05 |  |  |
| MOD-RWN-CC-168 |  | Identify discharge zones Gully Outfall for Rainwater Drainage Network Zone 3 | 4d | 2025-12-07 | 2025-12-11 | MOD-RWN-PC-274 SS | 11.9d |
| MOD-RWN-CC-178 |  | Excavate outfall channel Gully Outfall for Rainwater Drainage Network Zone 3 | 5d | 2025-12-11 | 2025-12-17 | MOD-RWN-CC-168 | 11.9d |
| MOD-RWN-CC-188 |  | Place concrete apron or pipes Gully Outfall for Rainwater Drainage Network Zone 3 | 10d | 2025-12-17 | 2025-12-29 | MOD-RWN-CC-178 | 11.9d |
| MOD-RWN-CC-198 |  | Provide slope protection (riprap) Gully Outfall for Rainwater Drainage Network Zone 3 | 4d | 2025-12-29 | 2026-01-03 | MOD-RWN-CC-188 | 11.9d |
| MOD-RWN-CC-208 |  | Compact and shape terrain Gully Outfall for Rainwater Drainage Network Zone 3 | 2d | 2026-01-03 | 2026-01-05 | MOD-RWN-CC-198 | 11.9d |
|  | 2 | **Rainwater Catch Basins** |  | 2025-12-07 | 2026-01-10 |  |  |
| MOD-RWN-CC-218 |  | Excavate pit area Catch Basin for Rainwater Drainage Network Zone 3 | 6d | 2025-12-07 | 2025-12-14 | MOD-RWN-PC-274 SS | 0.9d |
| MOD-RWN-CC-228 |  | Lay bedding and place chamber Catch Basin for Rainwater Drainage Network Zone 3 | 12d | 2025-12-14 | 2025-12-28 | MOD-RWN-CC-218 | 0.9d |
| MOD-RWN-CC-238 |  | Connect lateral inlet pipe Catch Basin for Rainwater Drainage Network Zone 3 | 4d | 2025-12-28 | 2026-01-01 | MOD-RWN-CC-228 | 0.9d |
| MOD-RWN-CC-248 |  | Cover with grating Catch Basin for Rainwater Drainage Network Zone 3 | 5d | 2026-01-01 | 2026-01-07 | MOD-RWN-CC-238 | 7.9d |
| MOD-RWN-CC-258 |  | Backfill and surface finish Catch Basin for Rainwater Drainage Network Zone 3 | 2d | 2026-01-07 | 2026-01-10 | MOD-RWN-CC-248, MOD-GEI-PL-001 | 7.9d |
|  | 3 | **Precast Chambers for Absorption Pits** |  | 2025-12-07 | 2026-01-17 |  |  |
| MOD-RWN-CC-268 |  | Excavate pit area Absorption Pit for Rainwater Drainage Network Zone 3 | 7d | 2025-12-07 | 2025-12-15 | MOD-RWN-PC-274 SS | 1.9d |
| MOD-RWN-CC-278 |  | Install base slab and precast chamber Absorption Pit for Rainwater Drainage Network Zone 3 | 12d | 2025-12-15 | 2025-12-29 | MOD-RWN-CC-268 | 1.9d |
| MOD-RWN-CC-288 |  | Connect outlet/inlet piping Absorption Pit for Rainwater Drainage Network Zone 3 | 5d | 2025-12-29 | 2026-01-04 | MOD-RWN-CC-278 | 1.9d |
| MOD-RWN-CC-298 |  | Waterproofing and protection Absorption Pit for Rainwater Drainage Network Zone 3 | 6d | 2026-01-04 | 2026-01-11 | MOD-RWN-CC-288 | 1.9d |
| MOD-RWN-CC-308 |  | Backfill and compact Absorption Pit for Rainwater Drainage Network Zone 3 | 5d | 2026-01-11 | 2026-01-17 | MOD-RWN-CC-298, MOD-GEI-PL-001 | 1.9d |
|  | 3 | **Gully Outfalls to Swales** |  | 2025-12-28 | 2026-01-18 |  |  |
|  | 1 | **Gully Outfalls to Swales** |  | 2025-12-28 | 2026-01-17 |  |  |
| MOD-RWN-GO-101 |  | Identify swale discharge zones Gully Outfall to Swales for Rainwater Drainage Network Zone 3 | 3d | 2025-12-28 | 2025-12-31 | MOD-RWN-CC-238 SS | 1.9d |
| MOD-RWN-GO-111 |  | Excavate outfall channel Gully Outfall to Swales for Rainwater Drainage Network Zone 3 | 4d | 2025-12-31 | 2026-01-05 | MOD-RWN-GO-101 | 1.9d |
| MOD-RWN-GO-121 |  | Place concrete apron or pipes Gully Outfall to Swales for Rainwater Drainage Network Zone 3 | 5d | 2026-01-05 | 2026-01-11 | MOD-RWN-GO-111 | 1.9d |
| MOD-RWN-GO-131 |  | Provide slope protection (riprap) Gully Outfall to Swales for Rainwater Drainage Network Zone 3 | 3d | 2026-01-11 | 2026-01-14 | MOD-RWN-GO-121 | 1.9d |
| MOD-RWN-GO-141 |  | Compact and shape terrain Gully Outfall to Swales for Rainwater Drainage Network Zone 3 | 2d | 2026-01-14 | 2026-01-17 | MOD-RWN-GO-131 | 1.9d |
|  | 2 | **Riprap Works & Protection** |  | 2025-12-28 | 2026-01-18 |  |  |
| MOD-RWN-GO-151 |  | Lay filter fabric/membrane for Rainwater Drainage Network Zone 3 | 3d | 2025-12-28 | 2025-12-31 | MOD-RWN-CC-238 SS | 0.9d |
| MOD-RWN-GO-161 |  | Place riprap/stone layer for Rainwater Drainage Network Zone 3 | 10d | 2025-12-31 | 2026-01-12 | MOD-RWN-GO-151 | 0.9d |
| MOD-RWN-GO-171 |  | Compact edges for Rainwater Drainage Network Zone 3 | 3d | 2026-01-12 | 2026-01-15 | MOD-RWN-GO-161 | 0.9d |
| MOD-RWN-GO-181 |  | Ensure hydraulic flow direction for Rainwater Drainage Network Zone 3 | 2d | 2026-01-15 | 2026-01-18 | MOD-RWN-GO-171 | 0.9d |
|  | 6 | **Backfilling & Bedding** |  | 2025-11-02 | 2026-01-18 |  |  |
|  | 1 | **Backfilling Materials (Type A – 201–700mm Pipes)** |  | 2025-11-02 | 2026-01-05 |  |  |
| MOD-RWN-BB-112 |  | Place granular bedding under pipe for Rainwater Drainage Network Zone 3 | 6d | 2025-11-02 | 2025-11-09 | MOD-RWN-PC-244 SS | 11.9d |
| MOD-RWN-BB-122 |  | Lay and align pipe for Rainwater Drainage Network Zone 3 | 21d | 2025-11-09 | 2025-12-03 | MOD-RWN-BB-112 | 11.9d |
| MOD-RWN-BB-132 |  | Backfill up to spring line for Rainwater Drainage Network Zone 3 | 13d | 2025-12-03 | 2025-12-18 | MOD-RWN-BB-122, MOD-GEI-PL-001 | 11.9d |
| MOD-RWN-BB-142 |  | Compact layer-wise for Rainwater Drainage Network Zone 3 | 9d | 2025-12-18 | 2025-12-29 | MOD-RWN-BB-132 | 11.9d |
| MOD-RWN-BB-152 |  | Final fill to subgrade level for Rainwater Drainage Network Zone 3 | 6d | 2025-12-29 | 2026-01-05 | MOD-RWN-BB-142 | 11.9d |
|  | 2 | **Gravel Bedding & Filter Cloth for uPVC Drain Pipes** |  | 2025-11-15 | 2026-01-18 |  |  |
| MOD-RWN-BB-162 |  | Line trench with filter cloth for Rainwater Drainage Network Zone 3 | 10d | 2025-11-15 | 2025-11-26 | MOD-RWN-PC-244 | 0.9d |
| MOD-RWN-BB-172 |  | Place and compact gravel bedding for Rainwater Drainage Network Zone 3 | 6d | 2025-11-26 | 2025-12-03 | MOD-RWN-BB-162 | 0.9d |
| MOD-RWN-BB-182 |  | Lay pipe within gravel zone for Rainwater Drainage Network Zone 3 | 21d | 2025-12-03 | 2025-12-28 | MOD-RWN-BB-172 | 0.9d |
| MOD-RWN-BB-192 |  | Wrap filter cloth above pipe for Rainwater Drainage Network Zone 3 | 6d | 2025-12-28 | 2026-01-04 | MOD-RWN-BB-182 | 0.9d |
| MOD-RWN-BB-202 |  | Final fill and trench restoration for Rainwater Drainage Network Zone 3 | 12d | 2026-01-04 | 2026-01-18 | MOD-RWN-BB-192 | 0.9d |
|  | 7 | **Deep Basin for Groundwater Collection (2.5–3.0m)** |  | 2025-11-10 | 2026-01-18 |  |  |

| ID | WBS | Task | Duration | Start | Finish | Predecessors | Total float |
| --- | --- | --- | --- | --- | --- | --- | --- |
| MOD-RWN-DB-001 |  | Deep excavation and safety shoring for Rainwater Drainage Network Zone 3 | 7d | 2025-11-10 | 2025-11-18 | MOD-RWN-BB-002 SS | 0.9d |
| MOD-RWN-DB-002 |  | Base and side wall construction (cast-in-situ or precast) for Rainwater Drainage Network Zone 3 | 10d | 2025-11-18 | 2025-11-30 | MOD-RWN-DB-001 | 0.9d |
| MOD-RWN-DB-003 |  | Pipe connections for inflow for Rainwater Drainage Network Zone 3 | 12d | 2025-11-30 | 2025-12-14 | MOD-RWN-DB-002, A102740, A1650 | 0.9d |
| MOD-RWN-DB-004 |  | Cover slab and access shaft for Rainwater Drainage Network Zone 3 | 13d | 2025-12-14 | 2025-12-29 | MOD-RWN-DB-003 | 0.9d |
| MOD-RWN-DB-005 |  | Waterproofing & sealant for Rainwater Drainage Network Zone 3 | 10d | 2025-12-29 | 2026-01-10 | MOD-RWN-DB-004 | 0.9d |
| MOD-RWN-DB-006 |  | Backfill in controlled layers for Rainwater Drainage Network Zone 3 | 7d | 2026-01-10 | 2026-01-18 | MOD-RWN-DB-005, MOD-GEI-PL-001 | 0.9d |
|  | 13 | **Potable Water Network Zone 3** |  | 2025-10-19 | 2026-01-18 |  |  |
|  | 13 | **Pipe Installation Works** |  | 2025-10-19 | 2025-12-14 |  |  |
| MOD-PWN-PI-313 |  | Trench Excavation for Potable Water Network Zone 3 | 21d | 2025-10-19 | 2025-11-08 | A102500, A102190 | 1d |
| MOD-PWN-PI-323 |  | Lean Concrete / Pipe Bedding Preparation for Potable Water Network Zone 3 | 4d | 2025-11-09 | 2025-11-12 | MOD-PWN-PI-313 | 35d |
| MOD-PWN-PI-333 |  | HDPE Pipe Laying (200 mm to 710 mm) for Potable Water Network Zone 3 | 21d | 2025-11-13 | 2025-12-03 | MOD-PWN-PI-323, A1650 | 35d |
| MOD-PWN-PI-343 |  | Test (Pressure-slope) for Potable Water Network Zone 3 | 3d | 2025-12-04 | 2025-12-06 | MOD-PWN-PI-333 | 35d |
| MOD-PWN-PI-353 |  | Coating / Wrapping for Potable Water Network Zone 3 | 5d | 2025-12-07 | 2025-12-11 | MOD-PWN-PI-343 | 35d |
| MOD-PWN-PI-363 |  | Backfilling & Warrning Tape for Potable Water Network Zone 3 | 3d | 2025-12-12 | 2025-12-14 | MOD-PWN-PI-353, MOD-PWN-PI-353 FF, MOD-GEI-PL-001 | 35d |
|  | 2 | **Valve Installation & Chambers** |  | 2025-11-09 | 2026-01-18 |  |  |
| MOD-PWN-VC-107 |  | Valve Chamber Excavation for Potable Water Network Zone 3 | 10d | 2025-11-09 | 2025-11-19 | MOD-PWN-PI-313 | 14d |
| MOD-PWN-VC-117 |  | RC Slab, Walls, or Precast Chambers for Potable Water Network Zone 3 | 7d | 2025-11-20 | 2025-11-27 | MOD-PWN-VC-107, A102760 | 24d |
| MOD-PWN-VC-77 |  | Gate Valves (225–710 mm) for Potable Water Network Zone 3 | 12d | 2025-12-07 | 2025-12-20 | A102750 | 0d |
| MOD-PWN-VC-87 |  | Butterfly Valves (355, 500, 630 mm) for Potable Water Network Zone 3 | 16d | 2025-12-07 | 2025-12-24 | MOD-PWN-VC-77 SS, A102750 | 0d |
| MOD-PWN-VC-97 |  | 3-exit (2 x 2.5-inch and 1 x 4-inch) dry vacuum cylinder detachable fire nozzle for Potable Water Network Zone 3 | 17d | 2025-12-07 | 2025-12-25 | MOD-PWN-VC-87 SS | 0d |
| MOD-PWN-VC-127 |  | Fixing Covers, Gratings, Frames for Potable Water Network Zone 3 | 14d | 2025-12-27 | 2026-01-11 | MOD-PWN-VC-117, MOD-PWN-VC-97 | 0d |
| MOD-PWN-VC-137 |  | Tagging & Painting for Potable Water Network Zone 3 | 6d | 2026-01-12 | 2026-01-18 | MOD-PWN-VC-127 | 0d |
|  | 3 | **Flow Meter Installation** |  | 2025-11-20 | 2026-01-11 |  |  |
| MOD-PWN-FM-55 |  | Chamber Excavation (280 mm, 300 mm, 500 mm, 800 mm) for Potable Water Network Zone 3 | 8d | 2025-11-20 | 2025-11-29 | MOD-PWN-VC-107 | 14d |
| MOD-PWN-FM-65 |  | RC or Precast Chamber Construction for Potable Water Network Zone 3 | 8d | 2025-11-30 | 2025-12-08 | MOD-PWN-FM-55, A102760 | 14d |
| MOD-PWN-FM-75 |  | Flowmeter Installation & Pipe Integration for Potable Water Network Zone 3 | 10d | 2025-12-18 | 2025-12-29 | MOD-PWN-FM-65, A102620 | 6d |
| MOD-PWN-FM-85 |  | Wiring/Cabling if applicable for Potable Water Network Zone 3 | 8d | 2025-12-30 | 2026-01-07 | MOD-PWN-FM-75 | 6d |
| MOD-PWN-FM-95 |  | Calibration & Commissioning for Potable Water Network Zone 3 | 3d | 2026-01-08 | 2026-01-11 | MOD-PWN-FM-85 | 6d |
|  | 4 | **Washout & Air Valve Chambers** |  | 2025-11-09 | 2026-01-03 |  |  |
| MOD-PWN-WA-77 |  | Chamber Excavation (280 mm to 710 mm) for Potable Water Network Zone 3 | 6d | 2025-11-09 | 2025-11-15 | MOD-PWN-VC-107 SS | 17d |
| MOD-PWN-WA-87 |  | RC Blinding + Base + Walls for Potable Water Network Zone 3 | 4d | 2025-11-16 | 2025-11-19 | MOD-PWN-WA-77 | 17d |
| MOD-PWN-WA-97 |  | Pipe Work for Potable Water Network Zone 3 | 15d | 2025-11-20 | 2025-12-07 | MOD-PWN-WA-87, A102740, A1650 | 17d |
| MOD-PWN-WA-107 |  | Washout (Valve + Outlet) Installation for Potable Water Network Zone 3 | 8d | 2025-12-08 | 2025-12-16 | MOD-PWN-WA-97, A102750 | 17d |
| MOD-PWN-WA-117 |  | Air Valve Rooms (Valve + Outlet) Installation for Potable Water Network Zone 3 | 6d | 2025-12-22 | 2025-12-28 | MOD-PWN-WA-107, A102780 | 13d |
| MOD-PWN-WA-127 |  | Covers, Ladders & Tags for Potable Water Network Zone 3 | 3d | 2025-12-29 | 2025-12-31 | MOD-PWN-WA-117 | 13d |
| MOD-PWN-WA-137 |  | Backfilling & Final Finishing for Potable Water Network Zone 3 | 2d | 2026-01-01 | 2026-01-03 | MOD-PWN-WA-127, MOD-GEI-PL-001 | 13d |
|  | 5 | **Pumping Station (Structure & Civil Works)** |  | 2025-10-19 | 2026-01-04 |  |  |
| MOD-PWN-PS-66 |  | Excavation & Blinding for Potable Water Network Zone 3 | 10d | 2025-10-19 | 2025-10-30 | MOD-PWN-PI-313 SS, A1600 | 0.9d |
| MOD-PWN-PS-76 |  | Reinforced Concrete/GRP Shell Construction for Potable Water Network Zone 3 | 8d | 2025-10-30 | 2025-11-09 | MOD-PWN-PS-66, A102340 | 0.9d |
| MOD-PWN-PS-86 |  | Access Ladders, Tight Cover, Surface Guttering for Potable Water Network Zone 3 | 5d | 2025-11-09 | 2025-11-15 | MOD-PWN-PS-76 | 0.9d |
| MOD-PWN-PS-96 |  | Internal piping & embedded sleeves for Potable Water Network Zone 3 | 13d | 2025-11-15 | 2025-11-30 | MOD-PWN-PS-86 | 0.9d |
| MOD-PWN-PS-106 |  | Pump Base Pads + Grouting for Potable Water Network Zone 3 | 13d | 2025-11-30 | 2025-12-15 | MOD-PWN-PS-96 | 1.9d |
| MOD-PWN-PS-116 |  | Backfilling & External Finishes for Potable Water Network Zone 3 | 17d | 2025-12-15 | 2026-01-04 | MOD-PWN-PS-106, MOD-GEI-PL-001 | 1.9d |
|  | 6 | **Pump Station Building** |  | 2025-11-30 | 2026-01-05 |  |  |
| MOD-PWN-PB-33 |  | Structure Construction (as per architectural drawings) for Potable Water Network Zone 3 | 13d | 2025-11-30 | 2025-12-15 | MOD-PWN-PS-96, A102810 | 0.9d |
| MOD-PWN-PB-43 |  | 5-ton Hoist Installation for Potable Water Network Zone 3 | 5d | 2025-12-15 | 2025-12-21 | MOD-PWN-PB-33 | 0.9d |
| MOD-PWN-PB-53 |  | Finishes, Doors, Ventilation for Potable Water Network Zone 3 | 13d | 2025-12-21 | 2026-01-05 | MOD-PWN-PB-43 | 0.9d |
|  | 7 | **Pumping Equipment & Fire Systems** |  | 2025-12-17 | 2026-01-18 |  |  |
| MOD-PWN-PE-88 |  | Main Pumps (250 kW, 295 L/s @ 60 m head) for Potable Water Network Zone 3 | 14d | 2025-12-17 | 2026-01-01 | MOD-PWN-PS-96, A102640 | 0d |
| MOD-PWN-PE-108 |  | Diesel Fire Water Pump (64 L/s @ 60 m) for Potable Water Network Zone 3 | 6d | 2026-01-03 | 2026-01-08 | MOD-PWN-PE-98 SS, A102640 | 0d |
| MOD-PWN-PE-118 |  | Electric Jockey Pump for Potable Water Network Zone 3 | 6d | 2026-01-03 | 2026-01-08 | MOD-PWN-PE-108 SS, A102640 | 0d |
| MOD-PWN-PE-128 |  | Submersible Fire Pumps (2 pcs, 10 L/s @ 10 m) for Potable Water Network Zone 3 | 4d | 2026-01-03 | 2026-01-06 | MOD-PWN-PE-118 SS, A102640 | 0d |
| MOD-PWN-PE-98 |  | Electric Fire Water Pump (64 L/s @ 60 m) for Potable Water Network Zone 3 | 8d | 2026-01-03 | 2026-01-11 | MOD-PWN-PE-88, A102640 | 0d |
| MOD-PWN-PE-138 |  | Pipework connections within Pump Room for Potable Water Network Zone 3 | 5d | 2026-01-07 | 2026-01-12 | MOD-PWN-PE-128, A102740, A1650 | 0d |
| MOD-PWN-PE-148 |  | MCC & DB panel installation for Potable Water Network Zone 3 | 2d | 2026-01-13 | 2026-01-14 | MOD-PWN-PE-138 | 0d |
| MOD-PWN-PE-158 |  | Flow meter on 800mm pipe including flow meter chamber and 2-2.5m depth for Potable Water Network Zone 3 | 3d | 2026-01-15 | 2026-01-18 | MOD-PWN-PE-148, A102620, A102760 | 0d |
|  | 8 | **Surge Protection** |  | 2026-01-13 | 2026-01-18 |  |  |
| MOD-PWN-SP-22 |  | Surge Vessel Installation for Potable Water Network Zone 3 | 4d | 2026-01-13 | 2026-01-17 | MOD-PWN-PE-138 | 0d |
| MOD-PWN-SP-32 |  | Pipe Integration as per Surge Analysis for Potable Water Network Zone 3 | 1d | 2026-01-18 | 2026-01-18 | MOD-PWN-SP-22, A102740, A1650 | 0d |
|  | 9 | **Power & Generator System** |  | 2026-01-03 | 2026-01-15 |  |  |
| MOD-PWN-PG-44 |  | 500 kVA Standby Generator Installation for Potable Water Network Zone 3 | 4d | 2026-01-03 | 2026-01-06 | A102680, MOD-PWN-PE-88 | 2d |
| MOD-PWN-PG-54 |  | Canopy, Foundation & Fuel Tank for Potable Water Network Zone 3 | 6d | 2026-01-03 | 2026-01-08 | MOD-PWN-PG-44 SS | 2d |
| MOD-PWN-PG-64 |  | Electrical Cabling, Circuit Breakers for Potable Water Network Zone 3 | 4d | 2026-01-10 | 2026-01-13 | MOD-PWN-PG-54 | 2d |
| MOD-PWN-PG-74 |  | Earthing & Commissioning for Potable Water Network Zone 3 | 2d | 2026-01-14 | 2026-01-15 | MOD-PWN-PG-64 | 2d |
|  | 10 | **Chlorination System** |  | 2026-01-03 | 2026-01-18 |  |  |
| MOD-PWN-CS-33 |  | Chlorination Device Supply & Installation for Potable Water Network Zone 3 | 7d | 2026-01-03 | 2026-01-10 | MOD-PWN-PB-33, MOD-PWN-PE-88 | 0d |
| MOD-PWN-CS-43 |  | Connections to Main Line or Disinfection Chamber for Potable Water Network Zone 3 | 4d | 2026-01-11 | 2026-01-14 | MOD-PWN-CS-33 | 0d |
| MOD-PWN-CS-53 |  | Control Integration for Potable Water Network Zone 3 | 3d | 2026-01-15 | 2026-01-18 | MOD-PWN-CS-43 | 0d |
|  | 11 | **Water Storage System** |  | 2026-01-05 | 2026-01-18 |  |  |
| MOD-PWN-WS-11 |  | Structural tanks for supply or pressure equalization for Potable Water Network Zone 3 | 11d | 2026-01-05 | 2026-01-18 | A102810, MOD-PWN-PB-53 | 0.9d |

| ID | WBS | Task | Duration | Start | Finish | Predecessors | Total float |
| --- | --- | --- | --- | --- | --- | --- | --- |
|  | 12 | **Street Lighting** |  | 2025-12-15 | 2026-01-18 |  |  |
| MOD-PWN-SL-55 |  | Excavation for Poles for Potable Water Network Zone 3 | 6d | 2025-12-15 | 2025-12-22 | MOD-PWN-PS-116 SS, A1600 | 1.9d |
| MOD-PWN-SL-65 |  | Conduits, Cabling, Backfilling for Potable Water Network Zone 3 | 12d | 2025-12-22 | 2026-01-05 | MOD-PWN-SL-55 | 1.9d |
| MOD-PWN-SL-75 |  | Pole & Fixture Installation for Potable Water Network Zone 3 | 16d | 2025-12-24 | 2026-01-11 | MOD-PWN-SL-65 SS, A102660 | 0d |
| MOD-PWN-SL-85 |  | Connection to Main Supply for Potable Water Network Zone 3 | 6d | 2026-01-12 | 2026-01-18 | MOD-PWN-SL-75 | 0d |
| MOD-PWN-SL-95 |  | Testing & Lighting Commissioning for Potable Water Network Zone 3 | 6d | 2026-01-12 | 2026-01-18 | MOD-PWN-SL-85 SS | 0d |
|  | 6 | **Irrigation Network Zone 3** |  | 2025-10-19 | 2026-01-11 |  |  |
|  | 1 | **Excavation, Pipe Laying & Backfilling** |  | 2025-10-19 | 2025-12-14 |  |  |
| MOD-IRN-EB-120 |  | Trench Excavation for Irrigation Network Zone 3 | 21d | 2025-10-19 | 2025-11-08 | A102500, A102190 | 35d |
| MOD-IRN-EB-130 |  | Lean Concrete / Pipe Bedding with Type B Material for Irrigation Network Zone 3 | 9d | 2025-11-09 | 2025-11-17 | MOD-IRN-EB-120 | 35d |
| MOD-IRN-EB-140 |  | HDPE Pipe Laying (125 mm to 630 mm) for Irrigation Network Zone 3 | 21d | 2025-11-18 | 2025-12-08 | MOD-IRN-EB-130, A1650 | 35d |
| MOD-IRN-EB-150 |  | Test (Pressure-slope) for Irrigation Network Zone 3 | 2d | 2025-12-09 | 2025-12-10 | MOD-IRN-EB-140 | 35d |
| MOD-IRN-EB-180 |  | Coating / Wrapping for Irrigation Network Zone 3 | 2d | 2025-12-11 | 2025-12-12 | MOD-IRN-EB-150 | 35d |
| MOD-IRN-EB-190 |  | Backfilling & Warrning Tape for Irrigation Network Zone 3 | 2d | 2025-12-13 | 2025-12-14 | MOD-IRN-EB-180, MOD-GEI-PL-001 | 35d |
|  | 2 | **Valves and Appurtenances** |  | 2025-12-07 | 2025-12-28 |  |  |
| MOD-IRN-VA-55 |  | Supply & Installation of Valves (Gate Valve) for Irrigation Network Zone 3 | 8d | 2025-12-07 | 2025-12-15 | A102750 | 7d |
| MOD-IRN-VA-65 |  | Supply & Installation of Valves (Butterfly Valve) for Irrigation Network Zone 3 | 8d | 2025-12-11 | 2025-12-20 | MOD-IRN-VA-55 SS+4d, A102750 | 14d |
| MOD-IRN-VA-75 |  | Installation of Flanges, Bolts, Collars, Nuts for Irrigation Network Zone 3 | 3d | 2025-12-21 | 2025-12-23 | MOD-IRN-VA-65 | 18d |
| MOD-IRN-VA-85 |  | Valve Pressure Testing for Irrigation Network Zone 3 | 2d | 2025-12-24 | 2025-12-25 | MOD-IRN-VA-75 | 18d |
| MOD-IRN-VA-95 |  | Support Brackets/Anchor Blocks for Irrigation Network Zone 3 | 2d | 2025-12-27 | 2025-12-28 | MOD-IRN-VA-85 | 18d |
|  | 3 | **Valve Rooms** |  | 2025-12-11 | 2026-01-01 |  |  |
| MOD-IRN-VR-77 |  | Excavation for Valve Room Valve Chamber for Irrigation Network Zone 3 | 3d | 2025-12-11 | 2025-12-14 | MOD-IRN-VA-65 SS, A1600 | 14d |
| MOD-IRN-VR-87 |  | Blinding Concrete Valve Chamber for Irrigation Network Zone 3 | 2d | 2025-12-15 | 2025-12-16 | MOD-IRN-VR-77, A103770 | 14d |
| MOD-IRN-VR-97 |  | RCC Base Slab & Chamber Walls Valve Chamber for Irrigation Network Zone 3 | 3d | 2025-12-17 | 2025-12-20 | MOD-IRN-VR-87, A102760 | 14d |
| MOD-IRN-VR-107 |  | Block Wall Construction (if any) Valve Chamber for Irrigation Network Zone 3 | 5d | 2025-12-21 | 2025-12-25 | MOD-IRN-VR-97 | 14d |
| MOD-IRN-VR-117 |  | Installation of Valve inside the Room Valve Chamber for Irrigation Network Zone 3 | 2d | 2025-12-27 | 2025-12-28 | MOD-IRN-VR-107 | 14d |
| MOD-IRN-VR-127 |  | Fixing Frame & Cover Valve Chamber for Irrigation Network Zone 3 | 2d | 2025-12-29 | 2025-12-30 | MOD-IRN-VR-117 | 14d |
| MOD-IRN-VR-137 |  | Backfilling and Finishing Valve Chamber for Irrigation Network Zone 3 | 2d | 2025-12-31 | 2026-01-01 | MOD-IRN-VR-127, MOD-GEI-PL-001 | 14d |
|  | 4 | **Washout Chambers** |  | 2025-12-07 | 2026-01-08 |  |  |
| MOD-IRN-WC-66 |  | Excavation for Chamber Washout Chamber for Irrigation Network Zone 3 | 5d | 2025-12-07 | 2025-12-11 | MOD-IRN-VA-55 SS, A1600 | 7d |
| MOD-IRN-WC-76 |  | Blinding Concrete Washout Chamber for Irrigation Network Zone 3 | 3d | 2025-12-13 | 2025-12-15 | MOD-IRN-WC-66, A103770 | 8d |
| MOD-IRN-WC-86 |  | Construction of RCC Base & Chamber Wall Washout Chamber for Irrigation Network Zone 3 | 8d | 2025-12-16 | 2025-12-24 | MOD-IRN-WC-76 | 8d |
| MOD-IRN-WC-96 |  | Washout Valve & Pipe Connection Washout Chamber for Irrigation Network Zone 3 | 5d | 2025-12-25 | 2025-12-30 | MOD-IRN-WC-86, A102750 | 8d |
| MOD-IRN-WC-106 |  | Manhole Frame, Cover & Ladder Fixing Washout Chamber for Irrigation Network Zone 3 | 3d | 2025-12-31 | 2026-01-03 | MOD-IRN-WC-96 | 8d |
| MOD-IRN-WC-116 |  | Backfilling & Reinstatement Washout Chamber for Irrigation Network Zone 3 | 5d | 2026-01-04 | 2026-01-08 | MOD-IRN-WC-106, MOD-GEI-PL-001 | 8d |
|  | 5 | **Air Valve Chambers** |  | 2025-12-07 | 2026-01-06 |  |  |
| MOD-IRN-AC-55 |  | Chamber Excavation Air Valve Chamber for Irrigation Network Zone 3 | 6d | 2025-12-07 | 2025-12-13 | MOD-IRN-WC-66 SS | 7d |
| MOD-IRN-AC-65 |  | Blinding & RCC Base Air Valve Chamber for Irrigation Network Zone 3 | 6d | 2025-12-14 | 2025-12-20 | MOD-IRN-AC-55, A103770 | 10d |
| MOD-IRN-AC-75 |  | Wall Casting / Blockwork Air Valve Chamber for Irrigation Network Zone 3 | 8d | 2025-12-21 | 2025-12-29 | MOD-IRN-AC-65 | 10d |
| MOD-IRN-AC-85 |  | Air Valve Installation (280–630 mm) Air Valve Chamber for Irrigation Network Zone 3 | 5d | 2025-12-30 | 2026-01-04 | MOD-IRN-AC-75, A102780 | 10d |
| MOD-IRN-AC-95 |  | Cover Fixing & Finishing Air Valve Chamber for Irrigation Network Zone 3 | 2d | 2026-01-05 | 2026-01-06 | MOD-IRN-AC-85 | 10d |
|  | 6 | **Flow Meter Chambers** |  | 2025-12-07 | 2026-01-11 |  |  |
| MOD-IRN-FC-66 |  | Chamber Excavation Flow Meter Chamber for Irrigation Network Zone 3 | 5d | 2025-12-07 | 2025-12-11 | MOD-IRN-AC-55 SS | 7d |
| MOD-IRN-FC-76 |  | RCC Base & Wall Construction Flow Meter Chamber for Irrigation Network Zone 3 | 4d | 2025-12-13 | 2025-12-16 | MOD-IRN-FC-66, A102760 | 7d |
| MOD-IRN-FC-86 |  | Flow Meter Installation (280, 300, 500 mm) Flow Meter Chamber for Irrigation Network Zone 3 | 6d | 2025-12-18 | 2025-12-24 | MOD-IRN-FC-76, A102620 | 6d |
| MOD-IRN-FC-96 |  | Integration with Pipework Flow Meter Chamber for Irrigation Network Zone 3 | 5d | 2025-12-25 | 2025-12-30 | MOD-IRN-FC-86 | 6d |
| MOD-IRN-FC-106 |  | Testing & Calibration Flow Meter Chamber for Irrigation Network Zone 3 | 6d | 2025-12-31 | 2026-01-06 | MOD-IRN-FC-96 | 6d |
| MOD-IRN-FC-116 |  | Cover and Access Arrangement Flow Meter Chamber for Irrigation Network Zone 3 | 4d | 2026-01-07 | 2026-01-11 | MOD-IRN-FC-106 | 6d |
|  | 7 | **Rainwater Collection Ponds Zone 3** |  | 2026-01-19 | 2026-11-14 |  |  |
|  | 10 | **Excavation for Rainwater Drainage Pond** |  | 2026-01-19 | 2026-03-14 |  |  |
|  | 11 | **Deep excavation, backfill, disposal for pond formation** |  | 2026-01-19 | 2026-03-14 |  |  |
| MOD-RCP-ER-78 |  | Mark and fence pond boundary for Rainwater Collection Ponds Zone 3 | 3d | 2026-01-19 | 2026-01-21 | MIL-0006, MOD-GEI-SF-001 | 38.8d |
| MOD-RCP-ER-88 |  | Excavate in layers to final depth for Rainwater Collection Ponds Zone 3 | 12d | 2026-01-22 | 2026-02-04 | MOD-RCP-ER-78 | 338.8d |
| MOD-RCP-ER-98 |  | Dewater during excavation for Rainwater Collection Ponds Zone 3 | 5d | 2026-02-05 | 2026-02-10 | MOD-RCP-ER-88 | 338.8d |
| MOD-RCP-ER-108 |  | Place warning tapes for Rainwater Collection Ponds Zone 3 | 6d | 2026-02-11 | 2026-02-19 | MOD-RCP-ER-98 | 338.8d |
| MOD-RCP-ER-118 |  | Dispose of rock/materials to approved dump area for Rainwater Collection Ponds Zone 3 | 7d | 2026-02-19 | 2026-03-05 | MOD-RCP-ER-108 | 338.8d |
| MOD-RCP-ER-128 |  | Backfill selected areas as per design for Rainwater Collection Ponds Zone 3 | 2d | 2026-03-07 | 2026-03-10 | MOD-RCP-ER-118, MOD-GEI-PL-001 | 338.8d |
| MOD-RCP-ER-138 |  | Final trimming and profiling for Rainwater Collection Ponds Zone 3 | 2d | 2026-03-10 | 2026-03-14 | MOD-RCP-ER-128 | 338.8d |
|  | 1 | **General Site Preparation** |  | 2026-01-22 | 2026-05-10 |  |  |
| MOD-RCP-GS-123 |  | Site demarcation for Rainwater Collection Ponds Zone 3 | 15d | 2026-01-22 | 2026-02-08 | MOD-RCP-ER-78 | 66.8d |
| MOD-RCP-GS-133 |  | Clearing and grubbing for Rainwater Collection Ponds Zone 3 | 20d | 2026-02-09 | 2026-03-16 | MOD-RCP-GS-123 | 66.8d |
| MOD-RCP-GS-183 |  | Earthwork excavation (other than topsoil or rock) - Zone 3 (3 Ponds) for Rainwater Collection Ponds Zone 3 | 21d | 2026-03-16 | 2026-04-15 | MOD-RCP-GS-133 | 66.8d |
| MOD-RCP-GS-193 |  | Transport and disposal to approved locations - Zone 3 (3 Ponds) for Rainwater Collection Ponds Zone 3 | 21d | 2026-04-15 | 2026-05-10 | MOD-RCP-GS-183 | 139.8d |
|  | 2 | **Backfilling Works** |  | 2026-05-10 | 2026-07-29 |  |  |
| MOD-RCP-BW-55 |  | Select material from excavation or import approved material for Rainwater Collection Ponds Zone 3 | 15d | 2026-05-10 | 2026-06-01 | MOD-RCP-GS-183, MOD-RCP-GS-193 | 139.8d |
| MOD-RCP-BW-65 |  | Place in layers not exceeding 300mm for Rainwater Collection Ponds Zone 3 | 21d | 2026-06-01 | 2026-06-25 | MOD-RCP-BW-55, MOD-RCP-GS-183 | 230.8d |
| MOD-RCP-BW-75 |  | Compact each layer to required density for Rainwater Collection Ponds Zone 3 | 20d | 2026-06-25 | 2026-07-19 | MOD-RCP-BW-65, MOD-RCP-GS-183 | 230.8d |
| MOD-RCP-BW-85 |  | Conduct field density tests for Rainwater Collection Ponds Zone 3 | 4d | 2026-07-19 | 2026-07-23 | MOD-RCP-BW-75, MOD-RCP-GS-183 | 230.8d |
| MOD-RCP-BW-95 |  | Final leveling and approval for Rainwater Collection Ponds Zone 3 | 5d | 2026-07-23 | 2026-07-29 | MOD-RCP-BW-85, MOD-RCP-GS-183 | 230.8d |
|  | 12 | **Geotextile & Bedding** |  | 2026-06-01 | 2026-08-17 |  |  |

| ID | WBS | Task | Duration | Start | Finish | Predecessors | Total float |
| --- | --- | --- | --- | --- | --- | --- | --- |
|  | 13 | **Installation of geotextile lining and coarse sand bedding** |  | 2026-06-01 | 2026-08-17 |  |  |
| MOD-RCP-GB-45 |  | Trim subgrade to required level for Rainwater Collection Ponds Zone 3 | 7d | 2026-06-01 | 2026-06-09 | MOD-RCP-BW-55, MOD-RCP-GS-183 | 139.8d |
| MOD-RCP-GB-55 |  | Lay HDPE geotextile membrane over compacted soil for Rainwater Collection Ponds Zone 3 | 21d | 2026-06-09 | 2026-07-04 | MOD-RCP-GB-45, MOD-RCP-GS-183 | 139.8d |
| MOD-RCP-GB-65 |  | Place 500mm thick coarse sand bedding for Rainwater Collection Ponds Zone 3 | 21d | 2026-07-04 | 2026-07-28 | MOD-RCP-GB-55, MOD-RCP-GS-183 | 139.8d |
| MOD-RCP-GB-75 |  | Compact and level bedding for Rainwater Collection Ponds Zone 3 | 17d | 2026-07-28 | 2026-08-17 | MOD-RCP-GB-65, MOD-RCP-GS-183 | 139.8d |
|  | 3 | **Concrete Structures** |  | 2026-08-17 | 2026-10-10 |  |  |
|  | 4 | **Construction of pond slab, walls, vertical structures** |  | 2026-08-17 | 2026-10-10 |  |  |
| MOD-RCP-CS-100 |  | Clean the subgrade for Rainwater Collection Ponds Zone 3 | 2d | 2026-08-17 | 2026-08-19 | MOD-RCP-GB-55 SS, MOD-RCP-GS-183, MOD-RCP-GB-75 | 139.8d |
| MOD-RCP-CS-110 |  | Lay 100mm thick blinding (C15) for Rainwater Collection Ponds Zone 3 | 3d | 2026-08-19 | 2026-08-23 | MOD-RCP-CS-100, MOD-RCP-GS-183 | 139.8d |
| MOD-RCP-CS-120 |  | Install formwork and reinforcement for Rainwater Collection Ponds Zone 3 | 8d | 2026-08-23 | 2026-09-01 | MOD-RCP-CS-110, MOD-RCP-GS-183 | 139.8d |
| MOD-RCP-CS-130 |  | Cast base slab with C20 concrete (300–500mm thick) for Rainwater Collection Ponds Zone 3 | 4d | 2026-09-01 | 2026-09-06 | MOD-RCP-CS-120, MOD-RCP-GS-183 | 139.8d |
| MOD-RCP-CS-140 |  | Construct sub-walls (150–300mm thick) for Rainwater Collection Ponds Zone 3 | 7d | 2026-09-06 | 2026-09-14 | MOD-RCP-CS-130, MOD-RCP-GS-183 | 139.8d |
| MOD-RCP-CS-150 |  | Construct vertical structures (0.2–1.22m wide) for Rainwater Collection Ponds Zone 3 | 9d | 2026-09-14 | 2026-09-26 | MOD-RCP-CS-140, MOD-RCP-GS-183 | 139.8d |
| MOD-RCP-CS-160 |  | Remove formwork after curing for Rainwater Collection Ponds Zone 3 | 3d | 2026-09-26 | 2026-09-29 | MOD-RCP-CS-150, MOD-RCP-GS-183 | 169.8d |
| MOD-RCP-CS-170 |  | Apply power floating finish for Rainwater Collection Ponds Zone 3 | 2d | 2026-09-29 | 2026-10-01 | MOD-RCP-CS-160, MOD-RCP-GS-183 | 169.8d |
| MOD-RCP-CS-180 |  | Apply waterproofing, bitumen, screed, perimeter lining for Rainwater Collection Ponds Zone 3 | 7d | 2026-10-01 | 2026-10-10 | MOD-RCP-CS-170, MOD-RCP-GS-183 | 169.8d |
|  | 5 | **Energy Dissipation & Siphon Structures** |  | 2026-09-26 | 2026-11-14 |  |  |
|  | 6 | **Siphon pipes, energy dissipators, and associated civil works** |  | 2026-09-26 | 2026-11-14 |  |  |
| MOD-RCP-ED-78 |  | Excavate for low-level areas for Rainwater Collection Ponds Zone 3 | 3d | 2026-09-26 | 2026-09-29 | MOD-RCP-CS-150, MOD-RCP-GS-183 | 139.8d |
| MOD-RCP-ED-88 |  | Lay granular bedding and compact for Rainwater Collection Ponds Zone 3 | 11d | 2026-09-29 | 2026-10-12 | MOD-RCP-ED-78, MOD-RCP-GS-183 | 139.8d |
| MOD-RCP-ED-98 |  | Install siphon pipe with DI 90° bends for Rainwater Collection Ponds Zone 3 | 10d | 2026-10-12 | 2026-10-24 | MOD-RCP-ED-88, MOD-RCP-GS-183 | 139.8d |
| MOD-RCP-ED-108 |  | Place coarse gravel tamping for Rainwater Collection Ponds Zone 3 | 8d | 2026-10-24 | 2026-11-02 | MOD-RCP-ED-98, MOD-RCP-GS-183 | 139.8d |
| MOD-RCP-ED-118 |  | Construct reinforced concrete side walls for Rainwater Collection Ponds Zone 3 | 6d | 2026-11-02 | 2026-11-09 | MOD-RCP-ED-108, MOD-RCP-GS-183 | 139.8d |
| MOD-RCP-ED-128 |  | Brickwork and finishing for Rainwater Collection Ponds Zone 3 | 2d | 2026-11-09 | 2026-11-11 | MOD-RCP-ED-118, MOD-RCP-GS-183 | 139.8d |
| MOD-RCP-ED-138 |  | Install energy dissipators (gabion baffles, riprap) for Rainwater Collection Ponds Zone 3 | 2d | 2026-11-11 | 2026-11-14 | MOD-RCP-ED-128, MOD-RCP-GS-183 | 139.8d |
|  | 8 | **Road Crossing Zone 3** |  | 2026-01-22 | 2026-10-13 |  |  |
|  | 14 | **uPVC Road Crossing Pipes** |  | 2026-01-22 | 2026-06-22 |  |  |
|  | 15 | **Installation of uPVC pipes of various diameters crossing roadways** |  | 2026-01-22 | 2026-06-22 |  |  |
| MOD-ROC-PV-002 |  | Demarcation and traffic diversion (if required) for Road Crossing Zone 3 | 6d | 2026-01-22 | 2026-01-28 | MOD-GEI-SF-001, MOD-RCP-ER-78 | 38.8d |
| MOD-ROC-PV-003 |  | Saw cutting and removal of asphalt (if applicable) for Road Crossing Zone 3 | 12d | 2026-01-29 | 2026-02-11 | MOD-ROC-PV-002 | 38.8d |
| MOD-ROC-PV-004 |  | Excavation across road width to required depth for Road Crossing Zone 3 | 21d | 2026-02-12 | 2026-03-26 | MOD-ROC-PV-003, A1600 | 38.8d |
| MOD-ROC-PV-005 |  | Preparation of trench base with compacted bedding for Road Crossing Zone 3 | 15d | 2026-03-26 | 2026-04-13 | MOD-ROC-PV-004 | 38.8d |
| MOD-ROC-PV-006 |  | Laying of uPVC pipe (300mm, 315mm, 400mm, 600mm dia) for Road Crossing Zone 3 | 21d | 2026-04-13 | 2026-05-07 | MOD-ROC-PV-005 | 38.8d |
| MOD-ROC-PV-007 |  | Placement of supports and protection around the pipe for Road Crossing Zone 3 | 10d | 2026-05-07 | 2026-05-19 | MOD-ROC-PV-006 | 38.8d |
| MOD-ROC-PV-008 |  | Testing of installed pipeline for Road Crossing Zone 3 | 6d | 2026-05-19 | 2026-05-26 | MOD-ROC-PV-007 | 38.8d |
| MOD-ROC-PV-009 |  | Backfilling and compaction in layers for Road Crossing Zone 3 | 13d | 2026-05-26 | 2026-06-15 | MOD-ROC-PV-008, MOD-GEI-PL-001 | 38.8d |
| MOD-ROC-PV-010 |  | Reinstatement of road surface for Road Crossing Zone 3 | 6d | 2026-06-15 | 2026-06-22 | MOD-ROC-PV-009 | 38.8d |
|  | 16 | **GRP Road Crossing Pipes** |  | 2026-06-22 | 2026-10-13 |  |  |
|  | 17 | **Installation of GRP pipes (800mm–1000mm dia) for road crossings** |  | 2026-06-22 | 2026-10-13 |  |  |
| MOD-ROC-GR-002 |  | Set out location and coordinate with road authority for Road Crossing Zone 3 | 5d | 2026-06-22 | 2026-06-28 | MOD-ROC-PV-002, MOD-ROC-PV-010 | 166.8d |
| MOD-ROC-GR-003 |  | Excavate trench across road at designed depth for Road Crossing Zone 3 | 12d | 2026-06-28 | 2026-07-12 | MOD-ROC-GR-002 | 166.8d |
| MOD-ROC-GR-004 |  | Lay compacted granular bedding for Road Crossing Zone 3 | 16d | 2026-07-12 | 2026-07-30 | MOD-ROC-GR-003 | 166.8d |
| MOD-ROC-GR-005 |  | Install GRP pipe (800mm & 1000mm dia) for Road Crossing Zone 3 | 21d | 2026-07-30 | 2026-08-24 | MOD-ROC-GR-004 | 166.8d |
| MOD-ROC-GR-006 |  | Provide structural supports and closure at both ends for Road Crossing Zone 3 | 9d | 2026-08-24 | 2026-09-03 | MOD-ROC-GR-005, A102810 | 166.8d |
| MOD-ROC-GR-007 |  | Perform leak testing as per specifications for Road Crossing Zone 3 | 5d | 2026-09-03 | 2026-09-09 | MOD-ROC-GR-006 | 166.8d |
| MOD-ROC-GR-008 |  | Backfill and compact in layers for Road Crossing Zone 3 | 15d | 2026-09-09 | 2026-09-28 | MOD-ROC-GR-007, MOD-GEI-PL-001 | 166.8d |
| MOD-ROC-GR-009 |  | Reinstate road surface (asphalt/concrete) for Road Crossing Zone 3 | 8d | 2026-09-28 | 2026-10-07 | MOD-ROC-GR-008 | 166.8d |
| MOD-ROC-GR-010 |  | Final inspection and approval by relevant authority for Road Crossing Zone 3 | 5d | 2026-10-07 | 2026-10-13 | MOD-ROC-GR-009 | 166.8d |
|  | 8 | **Zone 2** |  | 2025-10-19 | 2026-12-08 |  |  |
|  | 5 | **Sewerage Network Zone 2** |  | 2025-10-19 | 2026-03-04 |  |  |
|  | 1 | **Pipework: Supply, Installation, and Testing** |  | 2025-10-19 | 2026-02-03 |  |  |
|  | 1 | **UPVC Pipes Installation (150mm–315mm)** |  | 2025-10-19 | 2026-01-26 |  |  |
| MOD-SWN-PW-485 |  | Excavation and Trenching UPVC for Sewerage Network Zone 2 | 21d | 2025-10-19 | 2025-11-08 | A102500, A102190, A1600 | 376.8d |
| MOD-SWN-PW-495 |  | Lean Concrete / Bedding UPVC for Sewerage Network Zone 2 | 21d | 2025-11-09 | 2025-11-29 | MOD-SWN-PW-485 | 376.8d |
| MOD-SWN-PW-445 |  | UPVC Pipes Installation (150mm–315mm) UPVC for Sewerage Network Zone 2 | 13d | 2025-11-30 | 2025-12-12 | MOD-SWN-PW-485, MOD-SWN-PW-495, A1650 | 376.8d |
| MOD-SWN-PW-505 |  | Test (Pressure - Slope) UPVC for Sewerage Network Zone 2 | 15d | 2025-12-13 | 2025-12-27 | MOD-SWN-PW-445 | 384.8d |
| MOD-SWN-PW-515 |  | Coating / Wrapping UPVC for Sewerage Network Zone 2 | 15d | 2025-12-28 | 2026-01-11 | MOD-SWN-PW-505 | 384.8d |
| MOD-SWN-PW-475 |  | Backfilling & Warrning Tape UPVC for Sewerage Network Zone 2 | 15d | 2026-01-12 | 2026-01-26 | MOD-SWN-PW-465, MOD-SWN-PW-515, MOD-GEI-PL-001 | 384.8d |
|  | 2 | **GRP Pipes Installation (400mm–700mm)** |  | 2025-10-19 | 2026-02-03 |  |  |
| MOD-SWN-PW-535 |  | Excavation and Trenching GRP for Sewerage Network Zone 2 | 21d | 2025-10-19 | 2025-11-08 | A102500, A102190, A1600 | 376.8d |
| MOD-SWN-PW-545 |  | Lean Concrete / Bedding GRP for Sewerage Network Zone 2 | 21d | 2025-11-09 | 2025-11-29 | MOD-SWN-PW-535, MOD-SWN-PW-535 FF | 376.8d |
| MOD-SWN-PW-455 |  | GRP Pipes Installation (400mm–700mm) GRP for Sewerage Network Zone 2 | 21d | 2025-11-30 | 2025-12-20 | MOD-SWN-PW-445 SS, MOD-SWN-PW-545, A102560, A1650 | 376.8d |
| MOD-SWN-PW-555 |  | Test (Pressure - Slope) GRP for Sewerage Network Zone 2 | 15d | 2025-12-21 | 2026-01-04 | MOD-SWN-PW-455 | 376.8d |
| MOD-SWN-PW-565 |  | Coating / Wrapping GRP for Sewerage Network Zone 2 | 15d | 2026-01-05 | 2026-01-19 | MOD-SWN-PW-555, MOD-SWN-PW-555 FF | 376.8d |
| MOD-SWN-PW-525 |  | Backfilling & Warrning Tape GRP for Sewerage Network Zone 2 | 15d | 2026-01-20 | 2026-02-03 | MOD-SWN-PW-565, MOD-SWN-PW-565 FF, MOD-GEI-PL-001 | 376.8d |
|  | 3 | **HDPE Pressure Pipes Installation (250mm–630mm)** |  | 2025-10-19 | 2026-02-03 |  |  |
| MOD-SWN-PW-585 |  | Excavation and Trenching HDPE for Sewerage Network Zone 2 | 21d | 2025-10-19 | 2025-11-08 | A102500, A102190, A1600 | 376.8d |
| MOD-SWN-PW-595 |  | Lean Concrete / Bedding HDPE for Sewerage Network Zone 2 | 21d | 2025-11-09 | 2025-11-29 | MOD-SWN-PW-585, MOD-SWN-PW-585 FF | 376.8d |
| MOD-SWN-PW-465 |  | HDPE Pressure Pipes Installation (250mm–630mm) HDPE for Sewerage Network Zone 2 | 21d | 2025-11-30 | 2025-12-20 | MOD-SWN-PW-455 SS, MOD-SWN-PW-595, A1650 | 376.8d |
| MOD-SWN-PW-605 |  | Test (Pressure - Slope) HDPE for Sewerage Network Zone 2 | 15d | 2025-12-21 | 2026-01-04 | MOD-SWN-PW-465 | 376.8d |

| ID | WBS | Task | Duration | Start | Finish | Predecessors | Total float |
| --- | --- | --- | --- | --- | --- | --- | --- |
| MOD-SWN-PW-615 |  | Coating / Wrapping HDPE for Sewerage Network Zone 2 | 15d | 2026-01-05 | 2026-01-19 | MOD-SWN-PW-605, MOD-SWN-PW-605 FF | 376.8d |
| MOD-SWN-PW-575 |  | Backfilling & Warrning Tape HDPE for Sewerage Network Zone 2 | 15d | 2026-01-20 | 2026-02-03 | MOD-SWN-PW-615, MOD-SWN-PW-615 FF, MOD-GEI-PL-001 | 376.8d |
|  | 2 | **Fittings and Valves** |  | 2025-12-21 | 2026-01-20 |  |  |
| MOD-SWN-FV-5 |  | Supply & Installation of HDPE Elbows for Sewerage Network Zone 2 | 6d | 2025-12-21 | 2025-12-27 | MOD-SWN-PW-465 | 310.8d |
| MOD-SWN-FV-15 |  | Gate Valves Installation for Sewerage Network Zone 2 | 4d | 2025-12-28 | 2025-12-31 | MOD-SWN-FV-5, A102750 | 310.8d |
| MOD-SWN-FV-25 |  | Drain Valves Installation for Sewerage Network Zone 2 | 4d | 2026-01-01 | 2026-01-05 | MOD-SWN-FV-15 | 310.8d |
| MOD-SWN-FV-35 |  | Air Breather & Air Release Valves Installation for Sewerage Network Zone 2 | 10d | 2026-01-06 | 2026-01-17 | MOD-SWN-FV-25, A102780 | 310.8d |
| MOD-SWN-FV-45 |  | Jointing & Piping Accessories Installation for Sewerage Network Zone 2 | 3d | 2026-01-18 | 2026-01-20 | MOD-SWN-FV-35 | 310.8d |
|  | 3 | **Valve & Flow Meter Chambers** |  | 2025-10-19 | 2026-02-10 |  |  |
|  | 1 | **Valve Chambers Construction** |  | 2025-10-19 | 2026-01-04 |  |  |
| MOD-SWN-PW-975 |  | Excavation Valve Chamber for Sewerage Network Zone 2 | 21d | 2025-10-19 | 2025-11-08 | A102500, A102190, A1600 | 369.8d |
| MOD-SWN-PW-985 |  | Lean Concrete / Bedding Valve Chamber for Sewerage Network Zone 2 | 21d | 2025-11-09 | 2025-11-29 | MOD-SWN-PW-975, MOD-SWN-PW-975 FF, MOD-SWN-PW-975 SS | 369.8d |
| MOD-SWN-VF-124 |  | Valve Chambers Construction Valve Chamber for Sewerage Network Zone 2 | 6d | 2025-11-30 | 2025-12-05 | MOD-SWN-PW-985 | 369.8d |
| MOD-SWN-PW-995 |  | Test Valve Chamber for Sewerage Network Zone 2 | 15d | 2025-12-06 | 2025-12-20 | MOD-SWN-VF-124 | 406.8d |
| MOD-SWN-PW-965 |  | Backfilling Valve Chamber for Sewerage Network Zone 2 | 15d | 2025-12-21 | 2026-01-04 | MOD-SWN-PW-995, MOD-GEI-PL-001 | 406.8d |
|  | 2 | **Water Drain Chambers Construction** |  | 2025-10-19 | 2026-01-23 |  |  |
| MOD-SWN-PW-1015 |  | Excavation Water Drain Chamber for Sewerage Network Zone 2 | 21d | 2025-10-19 | 2025-11-08 | A102500, A102190, A1600 | 375.8d |
| MOD-SWN-PW-1025 |  | Lean Concrete / Bedding Water Drain Chamber for Sewerage Network Zone 2 | 21d | 2025-11-09 | 2025-11-29 | MOD-SWN-PW-1015, MOD-SWN-PW-1015 FF, MOD-SWN-PW-1015 SS | 375.8d |
| MOD-SWN-VF-134 |  | Water Drain Chambers Construction Water Drain Chamber for Sewerage Network Zone 2 | 19d | 2025-12-06 | 2025-12-24 | MOD-SWN-VF-124, MOD-SWN-PW-1025 | 369.8d |
| MOD-SWN-PW-1035 |  | Test Water Drain Chamber for Sewerage Network Zone 2 | 15d | 2025-12-25 | 2026-01-08 | MOD-SWN-VF-134 | 387.8d |
| MOD-SWN-PW-1005 |  | Backfilling Water Drain Chamber for Sewerage Network Zone 2 | 15d | 2026-01-09 | 2026-01-23 | MOD-SWN-PW-1035, MOD-GEI-PL-001 | 387.8d |
|  | 3 | **Discharge Chambers Construction** |  | 2025-10-19 | 2026-02-05 |  |  |
| MOD-SWN-PW-1055 |  | Excavation Discharge Chamber for Sewerage Network Zone 2 | 21d | 2025-10-19 | 2025-11-08 | A102500, A102190, A1600 | 394.8d |
| MOD-SWN-PW-1065 |  | Lean Concrete / Bedding Discharge Chamber for Sewerage Network Zone 2 | 21d | 2025-11-09 | 2025-11-29 | MOD-SWN-PW-1055, MOD-SWN-PW-1055 FF, MOD-SWN-PW-1055 SS | 394.8d |
| MOD-SWN-VF-144 |  | Discharge Chambers Construction Discharge Chamber for Sewerage Network Zone 2 | 13d | 2025-12-25 | 2026-01-06 | MOD-SWN-VF-134, MOD-SWN-PW-1065 | 369.8d |
| MOD-SWN-PW-1075 |  | Test Discharge Chamber for Sewerage Network Zone 2 | 15d | 2026-01-07 | 2026-01-21 | MOD-SWN-VF-144 | 374.8d |
| MOD-SWN-PW-1045 |  | Backfilling Discharge Chamber for Sewerage Network Zone 2 | 15d | 2026-01-22 | 2026-02-05 | MOD-SWN-PW-1075, MOD-GEI-PL-001 | 374.8d |
|  | 4 | **Flow Meter Chambers Construction** |  | 2025-10-19 | 2026-02-10 |  |  |
| MOD-SWN-PW-1095 |  | Excavation Flow Meter Chamber for Sewerage Network Zone 2 | 21d | 2025-10-19 | 2025-11-08 | A102500, A102190, A1600 | 407.8d |
| MOD-SWN-PW-1105 |  | Lean Concrete / Bedding Flow Meter Chamber for Sewerage Network Zone 2 | 21d | 2025-11-09 | 2025-11-29 | MOD-SWN-PW-1095, MOD-SWN-PW-1095 FF, MOD-SWN-PW-1095 SS | 407.8d |
| MOD-SWN-VF-154 |  | Flow Meter Chambers Construction Flow Meter Chamber for Sewerage Network Zone 2 | 5d | 2026-01-07 | 2026-01-11 | MOD-SWN-VF-144, MOD-SWN-PW-1105 | 369.8d |
| MOD-SWN-PW-1115 |  | Test Flow Meter Chamber for Sewerage Network Zone 2 | 15d | 2026-01-12 | 2026-01-26 | MOD-SWN-VF-154 | 369.8d |
| MOD-SWN-PW-1085 |  | Backfilling Flow Meter Chamber for Sewerage Network Zone 2 | 15d | 2026-01-27 | 2026-02-10 | MOD-SWN-PW-1115, MOD-GEI-PL-001 | 369.8d |
|  | 4 | **Manholes** |  | 2025-10-19 | 2026-03-04 |  |  |
| MOD-SWN-MH-45 |  | Depth Variation for Manholes for Sewerage Network Zone 2 | 8d | 2025-12-18 | 2025-12-27 | A102600 | 331.8d |
|  | 1 | **1200mm GRP Manholes with Backdrop** |  | 2025-10-19 | 2026-01-19 |  |  |
| MOD-SWN-PW-1455 |  | Excavation 1.2m GRP for Sewerage Network Zone 2 | 21d | 2025-10-19 | 2025-11-08 | A102500, A102190, A1600 | 347.8d |
| MOD-SWN-PW-1465 |  | Lean Concrete / Bedding 1.2m GRP for Sewerage Network Zone 2 | 21d | 2025-11-09 | 2025-11-29 | MOD-SWN-PW-1455, MOD-SWN-PW-1455 FF, MOD-SWN-PW-1455 SS | 347.8d |
| MOD-SWN-MH-145 |  | 1200mm GRP Manholes with Backdrop 1.2m GRP for Sewerage Network Zone 2 | 21d | 2025-11-30 | 2025-12-20 | MOD-SWN-PW-1465 | 347.8d |
| MOD-SWN-PW-1475 |  | Test 1.2m GRP for Sewerage Network Zone 2 | 15d | 2025-12-21 | 2026-01-04 | MOD-SWN-MH-145 | 391.8d |
| MOD-SWN-PW-1445 |  | Backfilling 1.2m GRP for Sewerage Network Zone 2 | 15d | 2026-01-05 | 2026-01-19 | MOD-SWN-PW-1475, MOD-GEI-PL-001 | 391.8d |
|  | 2 | **1500mm GRP Manholes (Standard & Backdrop)** |  | 2025-10-19 | 2026-02-09 |  |  |
| MOD-SWN-PW-1495 |  | Excavation 1.5m GRP for Sewerage Network Zone 2 | 21d | 2025-10-19 | 2025-11-08 | A102500, A102190, A1600 | 368.8d |
| MOD-SWN-PW-1505 |  | Lean Concrete / Bedding 1.5m GRP for Sewerage Network Zone 2 | 21d | 2025-11-09 | 2025-11-29 | MOD-SWN-PW-1495, MOD-SWN-PW-1495 FF, MOD-SWN-PW-1495 SS | 368.8d |
| MOD-SWN-MH-155 |  | 1500mm GRP Manholes (Standard & Backdrop) 1.5m GRP for Sewerage Network Zone 2 | 21d | 2025-12-21 | 2026-01-10 | MOD-SWN-MH-145, MOD-SWN-PW-1505 | 347.8d |
| MOD-SWN-PW-1515 |  | Test 1.5m GRP for Sewerage Network Zone 2 | 15d | 2026-01-11 | 2026-01-25 | MOD-SWN-MH-155 | 370.8d |
| MOD-SWN-PW-1485 |  | Backfilling 1.5m GRP for Sewerage Network Zone 2 | 15d | 2026-01-26 | 2026-02-09 | MOD-SWN-PW-1515, MOD-GEI-PL-001 | 370.8d |
|  | 3 | **1800mm GRP Manholes (Standard & Backdrop)** |  | 2025-10-19 | 2026-02-26 |  |  |
| MOD-SWN-PW-1535 |  | Excavation 1.8m GRP for Sewerage Network Zone 2 | 21d | 2025-10-19 | 2025-11-08 | A102500, A102190, A1600 | 389.8d |
| MOD-SWN-PW-1545 |  | Lean Concrete / Bedding 1.8m GRP for Sewerage Network Zone 2 | 21d | 2025-11-09 | 2025-11-29 | MOD-SWN-PW-1535, MOD-SWN-PW-1535 FF, MOD-SWN-PW-1535 SS | 389.8d |
| MOD-SWN-MH-165 |  | 1800mm GRP Manholes (Standard & Backdrop) 1.8m GRP for Sewerage Network Zone 2 | 17d | 2026-01-11 | 2026-01-27 | MOD-SWN-MH-155, MOD-SWN-PW-1545 | 347.8d |
| MOD-SWN-PW-1555 |  | Test 1.8m GRP for Sewerage Network Zone 2 | 15d | 2026-01-28 | 2026-02-11 | MOD-SWN-MH-165 | 353.8d |
| MOD-SWN-PW-1525 |  | Backfilling 1.8m GRP for Sewerage Network Zone 2 | 15d | 2026-02-12 | 2026-02-26 | MOD-SWN-PW-1555, MOD-GEI-PL-001 | 353.8d |
|  | 4 | **2000mm GRP Manholes (Standard & Backdrop)** |  | 2025-10-19 | 2026-03-04 |  |  |
| MOD-SWN-PW-1575 |  | Excavation 2m GRP for Sewerage Network Zone 2 | 21d | 2025-10-19 | 2025-11-08 | A102500, A102190, A1600 | 406.8d |
| MOD-SWN-PW-1585 |  | Lean Concrete / Bedding 2m GRP for Sewerage Network Zone 2 | 21d | 2025-11-09 | 2025-11-29 | MOD-SWN-PW-1575, MOD-SWN-PW-1575 FF, MOD-SWN-PW-1575 SS | 406.8d |
| MOD-SWN-MH-175 |  | 2000mm GRP Manholes (Standard & Backdrop) 2m GRP for Sewerage Network Zone 2 | 6d | 2026-01-28 | 2026-02-02 | MOD-SWN-MH-165, MOD-SWN-PW-1585 | 347.8d |
| MOD-SWN-PW-1595 |  | Test 2m GRP for Sewerage Network Zone 2 | 15d | 2026-02-03 | 2026-02-17 | MOD-SWN-MH-175 | 347.8d |
| MOD-SWN-PW-1565 |  | Backfilling 2m GRP for Sewerage Network Zone 2 | 15d | 2026-02-18 | 2026-03-04 | MOD-SWN-PW-1595, MOD-GEI-PL-001 | 347.8d |
|  | 6 | **Rainwater Drainage Network Zone 2** |  | 2025-10-19 | 2026-01-18 |  |  |
|  | 1 | **Pipe Laying Works** |  | 2025-10-19 | 2026-01-18 |  |  |
|  | 2 | **Supply & Installation of uPVC Pipes (250–300mm dia)** |  | 2025-10-19 | 2025-12-13 |  |  |
| MOD-RWN-PL-733 |  | Excavation to required depth UPVC for Rainwater Drainage Network Zone 2 | 21d | 2025-10-19 | 2025-11-08 | A102500, A102190, A1600 | 13d |
| MOD-RWN-PL-743 |  | Lean Concrete / Bedding UPVC for Rainwater Drainage Network Zone 2 | 5d | 2025-11-09 | 2025-11-13 | MOD-RWN-PL-733 | 13d |
| MOD-RWN-PL-753 |  | Laying of uPVC pipe UPVC for Rainwater Drainage Network Zone 2 | 19d | 2025-11-14 | 2025-12-02 | MOD-RWN-PL-743 | 13d |
| MOD-RWN-PL-773 |  | Test (Pressure-slope) UPVC for Rainwater Drainage Network Zone 2 | 3d | 2025-12-03 | 2025-12-05 | MOD-RWN-PL-753 | 13d |
| MOD-RWN-PL-763 |  | Coating / Wrapping UPVC for Rainwater Drainage Network Zone 2 | 2d | 2025-12-06 | 2025-12-07 | MOD-RWN-PL-773 | 42d |
| MOD-RWN-PL-783 |  | Backfilling & Warning Tape UPVC for Rainwater Drainage Network Zone 2 | 8d | 2025-12-06 | 2025-12-13 | MOD-RWN-PL-773, MOD-GEI-PL-001 | 36d |
|  | 3 | **Supply & Installation of GRP Pipes (350–800mm dia)** |  | 2025-10-19 | 2026-01-18 |  |  |
| MOD-RWN-PL-793 |  | Excavate short trench paths GRP for Rainwater Drainage Network Zone 2 | 21d | 2025-10-19 | 2025-11-08 | A102500, A102190 | 0d |

| ID | WBS | Task | Duration | Start | Finish | Predecessors | Total float |
| --- | --- | --- | --- | --- | --- | --- | --- |
| MOD-RWN-PL-803 |  | Lean Concrete / bedding material GRP for Rainwater Drainage Network Zone 2 | 8d | 2025-11-09 | 2025-11-16 | MOD-RWN-PL-793 | 0d |
| MOD-RWN-PL-813 |  | Lay & connect GRP for Rainwater Drainage Network Zone 2 | 21d | 2025-11-17 | 2025-12-07 | MOD-RWN-PL-803 | 0d |
| MOD-RWN-PL-823 |  | Test (Pressure-slope) GRP for Rainwater Drainage Network Zone 2 | 11d | 2025-12-08 | 2025-12-18 | MOD-RWN-PL-813 | 0d |
| MOD-RWN-PL-893 |  | Coating / Wrapping GRP for Rainwater Drainage Network Zone 2 | 21d | 2025-12-19 | 2026-01-08 | MOD-RWN-PL-823 | 0d |
| MOD-RWN-PL-833 |  | Backfilling & compaction GRP for Rainwater Drainage Network Zone 2 | 10d | 2026-01-09 | 2026-01-18 | MOD-RWN-PL-823, MOD-RWN-PL-893, MOD-GEI-PL-001 | 0d |
|  | 4 | **uPVC Connection Pipes (150mm dia)** |  | 2025-10-19 | 2026-01-05 |  |  |
| MOD-RWN-PL-843 |  | Excavate short trench paths UPVC Con. for Rainwater Drainage Network Zone 2 | 5d | 2025-10-19 | 2025-10-23 | A102500, A102190 | 50d |
| MOD-RWN-PL-853 |  | Lean Concrete / bedding material UPVC Con. for Rainwater Drainage Network Zone 2 | 3d | 2025-10-24 | 2025-10-26 | MOD-RWN-PL-843 | 50d |
| MOD-RWN-PL-863 |  | Lay & connect UPVC Con. for Rainwater Drainage Network Zone 2 | 8d | 2025-12-03 | 2025-12-10 | MOD-RWN-PL-853, MOD-RWN-PL-773 SS | 13d |
| MOD-RWN-PL-873 |  | Test (Pressure-slope) UPVC Con. for Rainwater Drainage Network Zone 2 | 3d | 2025-12-11 | 2025-12-13 | MOD-RWN-PL-863 | 13d |
| MOD-RWN-PL-903 |  | Coating / Wrapping UPVC Con. for Rainwater Drainage Network Zone 2 | 21d | 2025-12-14 | 2026-01-03 | MOD-RWN-PL-873 | 13d |
| MOD-RWN-PL-883 |  | Backfilling & compaction UPVC Con. for Rainwater Drainage Network Zone 2 | 2d | 2026-01-04 | 2026-01-05 | MOD-RWN-PL-873, MOD-RWN-PL-903, MOD-GEI-PL-001 | 13d |
|  | 5 | **Precast Concrete Box Culverts** |  | 2025-10-19 | 2026-01-18 |  |  |
|  | 1 | **Box Culverts (500x500mm to 3500x800mm)** |  | 2025-10-19 | 2026-01-18 |  |  |
| MOD-RWN-PC-24 |  | Survey and layout alignment Box culvert for Rainwater Drainage Network Zone 2 | 3d | 2025-10-19 | 2025-10-22 | MOD-RWN-PL-793 SS | 0d |
| MOD-RWN-PC-474 |  | Setting Benchmark Box culvert for Rainwater Drainage Network Zone 2 | 3d | 2025-10-22 | 2025-10-26 | MOD-RWN-PC-24 | 0d |
| MOD-RWN-PC-484 |  | Cleaning Box culvert for Rainwater Drainage Network Zone 2 | 4d | 2025-10-26 | 2025-10-30 | MOD-RWN-PC-474 | 0d |
| MOD-RWN-PC-494 |  | Testing Box culvert for Rainwater Drainage Network Zone 2 | 3d | 2025-10-30 | 2025-11-03 | MOD-RWN-PC-484 | 0d |
| MOD-RWN-PC-34 |  | Excavation to required depth Box culvert for Rainwater Drainage Network Zone 2 | 21d | 2025-11-03 | 2025-11-27 | MOD-RWN-PC-24, MOD-RWN-PC-494, A1600 | 0d |
| MOD-RWN-PC-44 |  | Dewatering and trench shoring Box culvert for Rainwater Drainage Network Zone 2 | 7d | 2025-11-27 | 2025-12-06 | MOD-RWN-PC-34 | 0d |
| MOD-RWN-PC-54 |  | Bedding preparation (gravel/lean concrete) Box culvert for Rainwater Drainage Network Zone 2 | 6d | 2025-12-06 | 2025-12-13 | MOD-RWN-PC-44 | 0d |
| MOD-RWN-PC-64 |  | Installation of box culvert units Box culvert for Rainwater Drainage Network Zone 2 | 11d | 2025-12-13 | 2025-12-25 | MOD-RWN-PC-54 | 0d |
| MOD-RWN-PC-74 |  | Alignment and joint sealing Box culvert for Rainwater Drainage Network Zone 2 | 4d | 2025-12-25 | 2025-12-30 | MOD-RWN-PC-64 | 0d |
| MOD-RWN-PC-84 |  | Construct headwalls/wing walls (if needed) Box culvert for Rainwater Drainage Network Zone 2 | 7d | 2025-12-30 | 2026-01-07 | MOD-RWN-PC-74, A102810 | 0d |
| MOD-RWN-PC-94 |  | Backfilling and compaction Box culvert for Rainwater Drainage Network Zone 2 | 6d | 2026-01-07 | 2026-01-14 | MOD-RWN-PC-84, MOD-GEI-PL-001 | 0d |
| MOD-RWN-PC-104 |  | Surface finishing Box culvert for Rainwater Drainage Network Zone 2 | 3d | 2026-01-15 | 2026-01-18 | MOD-RWN-PC-94 FS+0.9d | 0d |
|  | 2 | **Tube Culverts at Road Intersections** |  | 2025-11-27 | 2026-01-18 |  |  |
| MOD-RWN-PC-114 |  | Traffic control setup Tube culvert for Rainwater Drainage Network Zone 2 | 2d | 2025-11-27 | 2025-11-30 | MOD-RWN-PC-34 | 0d |
| MOD-RWN-PC-124 |  | Trench excavation under road Tube culvert for Rainwater Drainage Network Zone 2 | 11d | 2025-11-30 | 2025-12-13 | MOD-RWN-PC-114, A102790 | 0d |
| MOD-RWN-PC-134 |  | Pipe bedding and twin pipe alignment Tube culvert for Rainwater Drainage Network Zone 2 | 6d | 2025-12-13 | 2025-12-20 | MOD-RWN-PC-124 | 0d |
| MOD-RWN-PC-144 |  | Pipe laying and jointing Tube culvert for Rainwater Drainage Network Zone 2 | 20d | 2025-12-20 | 2026-01-12 | MOD-RWN-PC-134, A102740, A1650 | 0d |
| MOD-RWN-PC-154 |  | Backfilling and road reinstatement Tube culvert for Rainwater Drainage Network Zone 2 | 5d | 2026-01-13 | 2026-01-18 | MOD-RWN-PC-144 FS+0.9d, MOD-GEI-PL-001 | 0d |
|  | 3 | **Box Culverts at Road Intersections** |  | 2025-11-30 | 2026-01-18 |  |  |
| MOD-RWN-PC-164 |  | Traffic diversion and barricading for Rainwater Drainage Network Zone 2 | 15d | 2025-11-30 | 2025-12-17 | MOD-RWN-PC-114 | 0d |
| MOD-RWN-PC-174 |  | Deep trench excavation with shoring for Rainwater Drainage Network Zone 2 | 1d | 2025-12-17 | 2025-12-18 | MOD-RWN-PC-164 | 0d |
| MOD-RWN-PC-184 |  | Place bedding material for Rainwater Drainage Network Zone 2 | 1d | 2025-12-18 | 2025-12-20 | MOD-RWN-PC-174 | 0d |
| MOD-RWN-PC-194 |  | Install precast box culvert for Rainwater Drainage Network Zone 2 | 4d | 2025-12-20 | 2025-12-24 | MOD-RWN-PC-184 | 0d |
| MOD-RWN-PC-204 |  | Construct connection chambers (if needed) for Rainwater Drainage Network Zone 2 | 1d | 2025-12-24 | 2025-12-25 | MOD-RWN-PC-194, A102810 | 0d |
| MOD-RWN-PC-214 |  | Joint treatment and testing for Rainwater Drainage Network Zone 2 | 12d | 2025-12-25 | 2026-01-08 | MOD-RWN-PC-204 | 0d |
| MOD-RWN-PC-224 |  | Backfilling and surface reinstatement for Rainwater Drainage Network Zone 2 | 8d | 2026-01-10 | 2026-01-18 | MOD-RWN-PC-214 FS+0.9d, MOD-GEI-PL-001 | 0d |
|  | 4 | **Manholes** |  | 2025-12-13 | 2026-01-18 |  |  |
|  | 1 | **Circular GRP Manholes (1200–1800mm dia)** |  | 2025-12-13 | 2026-01-18 |  |  |
| MOD-RWN-MH-24 |  | Excavate to full manhole depth Circular Manhole for Rainwater Drainage Network Zone 2 | 4d | 2025-12-13 | 2025-12-17 | MOD-RWN-PC-64 SS | 0d |
| MOD-RWN-MH-34 |  | Dewatering and safety barriers Circular Manhole for Rainwater Drainage Network Zone 2 | 7d | 2025-12-17 | 2025-12-25 | MOD-RWN-MH-24 | 0d |
| MOD-RWN-MH-44 |  | Concrete base construction Circular Manhole for Rainwater Drainage Network Zone 2 | 5d | 2025-12-25 | 2025-12-31 | MOD-RWN-MH-34, A103770 | 0d |
| MOD-RWN-MH-54 |  | Install GRP manhole shaft sections Circular Manhole for Rainwater Drainage Network Zone 2 | 8d | 2025-12-31 | 2026-01-10 | MOD-RWN-MH-44, A102600 | 0d |
| MOD-RWN-MH-64 |  | Place slab and cover frame Circular Manhole for Rainwater Drainage Network Zone 2 | 3d | 2026-01-10 | 2026-01-13 | MOD-RWN-MH-54 | 0d |
| MOD-RWN-MH-74 |  | Waterproofing Circular Manhole for Rainwater Drainage Network Zone 2 | 2d | 2026-01-13 | 2026-01-15 | MOD-RWN-MH-64 | 0d |
| MOD-RWN-MH-84 |  | Backfilling and compaction Circular Manhole for Rainwater Drainage Network Zone 2 | 2d | 2026-01-17 | 2026-01-18 | MOD-RWN-MH-74 FS+0.9d, MOD-GEI-PL-001 | 0d |
|  | 3 | **Concrete Manholes for 1500x1500 Box Pipes** |  | 2025-12-13 | 2026-01-11 |  |  |
| MOD-RWN-MH-164 |  | Excavation Concrete Manhole 1.5x1.5 for Rainwater Drainage Network Zone 2 | 5d | 2025-12-13 | 2025-12-18 | MOD-RWN-PC-64 SS, A1600 | 6.9d |
| MOD-RWN-MH-174 |  | Base slab and wall shuttering Concrete Manhole 1.5x1.5 for Rainwater Drainage Network Zone 2 | 4d | 2025-12-18 | 2025-12-23 | MOD-RWN-MH-164 | 6.9d |
| MOD-RWN-MH-184 |  | Wall reinforcement and casting Concrete Manhole 1.5x1.5 for Rainwater Drainage Network Zone 2 | 6d | 2025-12-23 | 2025-12-30 | MOD-RWN-MH-174 | 6.9d |
| MOD-RWN-MH-194 |  | Roof slab with openings Concrete Manhole 1.5x1.5 for Rainwater Drainage Network Zone 2 | 3d | 2025-12-30 | 2026-01-03 | MOD-RWN-MH-184 | 6.9d |
| MOD-RWN-MH-204 |  | Masonry/benching works inside Concrete Manhole 1.5x1.5 for Rainwater Drainage Network Zone 2 | 2d | 2026-01-03 | 2026-01-05 | MOD-RWN-MH-194 | 6.9d |
| MOD-RWN-MH-214 |  | Install cover and frame Concrete Manhole 1.5x1.5 for Rainwater Drainage Network Zone 2 | 2d | 2026-01-05 | 2026-01-07 | MOD-RWN-MH-204, A102580 | 6.9d |
| MOD-RWN-MH-224 |  | Backfill in layers Concrete Manhole 1.5x1.5 for Rainwater Drainage Network Zone 2 | 3d | 2026-01-07 | 2026-01-11 | MOD-RWN-MH-214, MOD-GEI-PL-001 | 6.9d |
|  | 2 | **Concrete Manholes for 1000x1000 Box Pipes** |  | 2025-12-13 | 2026-01-15 |  |  |
| MOD-RWN-MH-94 |  | Excavation Concrete Manhole 1x1 for Rainwater Drainage Network Zone 2 | 4d | 2025-12-13 | 2025-12-17 | MOD-RWN-PC-64 SS, A1600 | 2.9d |
| MOD-RWN-MH-104 |  | Base slab and wall shuttering Concrete Manhole 1x1 for Rainwater Drainage Network Zone 2 | 2d | 2025-12-17 | 2025-12-20 | MOD-RWN-MH-94 | 2.9d |
| MOD-RWN-MH-114 |  | Wall reinforcement and casting Concrete Manhole 1x1 for Rainwater Drainage Network Zone 2 | 5d | 2025-12-20 | 2025-12-25 | MOD-RWN-MH-104 | 2.9d |
| MOD-RWN-MH-124 |  | Roof slab with openings Concrete Manhole 1x1 for Rainwater Drainage Network Zone 2 | 6d | 2025-12-25 | 2026-01-01 | MOD-RWN-MH-114 | 2.9d |
| MOD-RWN-MH-134 |  | Masonry/benching works inside Concrete Manhole 1x1 for Rainwater Drainage Network Zone 2 | 5d | 2026-01-01 | 2026-01-07 | MOD-RWN-MH-124 | 2.9d |
| MOD-RWN-MH-144 |  | Install cover and frame Concrete Manhole 1x1 for Rainwater Drainage Network Zone 2 | 4d | 2026-01-07 | 2026-01-12 | MOD-RWN-MH-134, A102580 | 2.9d |
| MOD-RWN-MH-154 |  | Backfill in layers Concrete Manhole 1x1 for Rainwater Drainage Network Zone 2 | 3d | 2026-01-12 | 2026-01-15 | MOD-RWN-MH-144, MOD-GEI-PL-001 | 2.9d |
|  | 2 | **Chambers and Catch Basins** |  | 2025-12-13 | 2026-01-18 |  |  |
|  | 1 | **Gully Outfalls** |  | 2025-12-13 | 2026-01-18 |  |  |
| MOD-RWN-CC-18 |  | Identify discharge zones Gully Outfall for Rainwater Drainage Network Zone 2 | 4d | 2025-12-13 | 2025-12-17 | MOD-RWN-PC-64 SS | 0.9d |
| MOD-RWN-CC-28 |  | Excavate outfall channel Gully Outfall for Rainwater Drainage Network Zone 2 | 6d | 2025-12-17 | 2025-12-24 | MOD-RWN-CC-18 | 0.9d |
| MOD-RWN-CC-38 |  | Place concrete apron or pipes Gully Outfall for Rainwater Drainage Network Zone 2 | 11d | 2025-12-24 | 2026-01-06 | MOD-RWN-CC-28 | 0.9d |

| ID | WBS | Task | Duration | Start | Finish | Predecessors | Total float |
| --- | --- | --- | --- | --- | --- | --- | --- |
| MOD-RWN-CC-48 |  | Provide slope protection (riprap) Gully Outfall for Rainwater Drainage Network Zone 2 | 6d | 2026-01-06 | 2026-01-13 | MOD-RWN-CC-38 | 0.9d |
| MOD-RWN-CC-58 |  | Compact and shape terrain Gully Outfall for Rainwater Drainage Network Zone 2 | 4d | 2026-01-13 | 2026-01-18 | MOD-RWN-CC-48 | 0.9d |
|  | 2 | **Rainwater Catch Basins** |  | 2025-12-13 | 2026-01-11 |  |  |
| MOD-RWN-CC-68 |  | Excavate pit area Catch Basin for Rainwater Drainage Network Zone 2 | 6d | 2025-12-13 | 2025-12-20 | MOD-RWN-PC-64 SS | 0d |
| MOD-RWN-CC-78 |  | Lay bedding and place chamber Catch Basin for Rainwater Drainage Network Zone 2 | 4d | 2025-12-20 | 2025-12-24 | MOD-RWN-CC-68 | 0d |
| MOD-RWN-CC-88 |  | Connect lateral inlet pipe Catch Basin for Rainwater Drainage Network Zone 2 | 8d | 2025-12-24 | 2026-01-03 | MOD-RWN-CC-78 | 0d |
| MOD-RWN-CC-98 |  | Cover with grating Catch Basin for Rainwater Drainage Network Zone 2 | 5d | 2026-01-03 | 2026-01-08 | MOD-RWN-CC-88 | 6.9d |
| MOD-RWN-CC-108 |  | Backfill and surface finish Catch Basin for Rainwater Drainage Network Zone 2 | 2d | 2026-01-08 | 2026-01-11 | MOD-RWN-CC-98, MOD-GEI-PL-001 | 6.9d |
|  | 3 | **Precast Chambers for Absorption Pits** |  | 2025-12-13 | 2026-01-18 |  |  |
| MOD-RWN-CC-118 |  | Excavate pit area Absorption Pit for Rainwater Drainage Network Zone 2 | 5d | 2025-12-13 | 2025-12-18 | MOD-RWN-PC-64 SS | 0d |
| MOD-RWN-CC-128 |  | Install base slab and precast chamber Absorption Pit for Rainwater Drainage Network Zone 2 | 6d | 2025-12-18 | 2025-12-25 | MOD-RWN-CC-118 | 0d |
| MOD-RWN-CC-138 |  | Connect outlet/inlet piping Absorption Pit for Rainwater Drainage Network Zone 2 | 9d | 2025-12-27 | 2026-01-05 | MOD-RWN-CC-128 FS+0.9d | 0d |
| MOD-RWN-CC-148 |  | Waterproofing and protection Absorption Pit for Rainwater Drainage Network Zone 2 | 6d | 2026-01-06 | 2026-01-12 | MOD-RWN-CC-138 | 0d |
| MOD-RWN-CC-158 |  | Backfill and compact Absorption Pit for Rainwater Drainage Network Zone 2 | 5d | 2026-01-13 | 2026-01-18 | MOD-RWN-CC-148, MOD-GEI-PL-001 | 0d |
|  | 3 | **Gully Outfalls to Swales** |  | 2025-12-24 | 2026-01-18 |  |  |
|  | 1 | **Gully Outfalls to Swales** |  | 2025-12-24 | 2026-01-18 |  |  |
| MOD-RWN-GO-11 |  | Identify swale discharge zones Gully Outfall to Swales for Rainwater Drainage Network Zone 2 | 3d | 2025-12-24 | 2025-12-28 | MOD-RWN-CC-88 SS | 0d |
| MOD-RWN-GO-21 |  | Excavate outfall channel Gully Outfall to Swales for Rainwater Drainage Network Zone 2 | 5d | 2025-12-28 | 2026-01-03 | MOD-RWN-GO-11 | 0d |
| MOD-RWN-GO-31 |  | Place concrete apron or pipes Gully Outfall to Swales for Rainwater Drainage Network Zone 2 | 7d | 2026-01-03 | 2026-01-11 | MOD-RWN-GO-21 | 0d |
| MOD-RWN-GO-41 |  | Provide slope protection (riprap) Gully Outfall to Swales for Rainwater Drainage Network Zone 2 | 4d | 2026-01-11 | 2026-01-15 | MOD-RWN-GO-31 | 0d |
| MOD-RWN-GO-51 |  | Compact and shape terrain Gully Outfall to Swales for Rainwater Drainage Network Zone 2 | 2d | 2026-01-17 | 2026-01-18 | MOD-RWN-GO-41 FS+0.9d | 0d |
|  | 2 | **Riprap Works & Protection** |  | 2025-12-24 | 2026-01-14 |  |  |
| MOD-RWN-GO-61 |  | Lay filter fabric/membrane for Rainwater Drainage Network Zone 2 | 3d | 2025-12-24 | 2025-12-28 | MOD-RWN-CC-88 SS | 3.9d |
| MOD-RWN-GO-71 |  | Place riprap/stone layer for Rainwater Drainage Network Zone 2 | 7d | 2025-12-28 | 2026-01-05 | MOD-RWN-GO-61 | 3.9d |
| MOD-RWN-GO-81 |  | Compact edges for Rainwater Drainage Network Zone 2 | 5d | 2026-01-05 | 2026-01-11 | MOD-RWN-GO-71 | 3.9d |
| MOD-RWN-GO-91 |  | Ensure hydraulic flow direction for Rainwater Drainage Network Zone 2 | 3d | 2026-01-11 | 2026-01-14 | MOD-RWN-GO-81 | 3.9d |
|  | 6 | **Backfilling & Bedding** |  | 2025-11-03 | 2026-01-06 |  |  |
|  | 1 | **Backfilling Materials (Type A – 201–700mm Pipes)** |  | 2025-11-03 | 2026-01-06 |  |  |
| MOD-RWN-BB-12 |  | Place granular bedding under pipe for Rainwater Drainage Network Zone 2 | 6d | 2025-11-03 | 2025-11-10 | MOD-RWN-PC-34 SS | 10.9d |
| MOD-RWN-BB-22 |  | Lay and align pipe for Rainwater Drainage Network Zone 2 | 21d | 2025-11-10 | 2025-12-04 | MOD-RWN-BB-12 | 10.9d |
| MOD-RWN-BB-32 |  | Backfill up to spring line for Rainwater Drainage Network Zone 2 | 13d | 2025-12-04 | 2025-12-20 | MOD-RWN-BB-22, MOD-GEI-PL-001 | 10.9d |
| MOD-RWN-BB-42 |  | Compact layer-wise for Rainwater Drainage Network Zone 2 | 9d | 2025-12-20 | 2025-12-30 | MOD-RWN-BB-32 | 10.9d |
| MOD-RWN-BB-52 |  | Final fill to subgrade level for Rainwater Drainage Network Zone 2 | 6d | 2025-12-30 | 2026-01-06 | MOD-RWN-BB-42 | 10.9d |
|  | 2 | **Gravel Bedding & Filter Cloth for uPVC Drain Pipes** |  | 2025-11-27 | 2026-01-06 |  |  |
| MOD-RWN-BB-62 |  | Line trench with filter cloth for Rainwater Drainage Network Zone 2 | 6d | 2025-11-27 | 2025-12-04 | MOD-RWN-PC-34 | 10.9d |
| MOD-RWN-BB-72 |  | Place and compact gravel bedding for Rainwater Drainage Network Zone 2 | 4d | 2025-12-04 | 2025-12-09 | MOD-RWN-BB-62 | 10.9d |
| MOD-RWN-BB-82 |  | Lay pipe within gravel zone for Rainwater Drainage Network Zone 2 | 9d | 2025-12-09 | 2025-12-20 | MOD-RWN-BB-72 | 10.9d |
| MOD-RWN-BB-92 |  | Wrap filter cloth above pipe for Rainwater Drainage Network Zone 2 | 7d | 2025-12-20 | 2025-12-28 | MOD-RWN-BB-82 | 10.9d |
| MOD-RWN-BB-102 |  | Final fill and trench restoration for Rainwater Drainage Network Zone 2 | 8d | 2025-12-28 | 2026-01-06 | MOD-RWN-BB-92 | 10.9d |
|  | 1 | **Potable Water Network Zone 2** |  | 2025-10-19 | 2026-01-13 |  |  |
|  | 1 | **Pipe Installation Works** |  | 2025-10-19 | 2025-12-14 |  |  |
| MOD-PWN-PI-143 |  | Trench Excavation for Potable Water Network Zone 2 | 21d | 2025-10-19 | 2025-11-08 | A102500, A102190 | 10d |
| MOD-PWN-PI-153 |  | Lean Concrete / Pipe Bedding Preparation for Potable Water Network Zone 2 | 4d | 2025-11-09 | 2025-11-12 | MOD-PWN-PI-143 | 35d |
| MOD-PWN-PI-163 |  | HDPE Pipe Laying (200 mm to 710 mm) for Potable Water Network Zone 2 | 21d | 2025-11-13 | 2025-12-03 | MOD-PWN-PI-153, A1650 | 35d |
| MOD-PWN-PI-173 |  | Test (Pressure-slope) for Potable Water Network Zone 2 | 3d | 2025-12-04 | 2025-12-06 | MOD-PWN-PI-163 | 35d |
| MOD-PWN-PI-203 |  | Coating / Wrapping for Potable Water Network Zone 2 | 5d | 2025-12-07 | 2025-12-11 | MOD-PWN-PI-173 | 35d |
| MOD-PWN-PI-213 |  | Backfilling & Warrning Tape for Potable Water Network Zone 2 | 3d | 2025-12-12 | 2025-12-14 | MOD-PWN-PI-203, MOD-PWN-PI-203 FF, MOD-GEI-PL-001 | 35d |
|  | 2 | **Valve Installation & Chambers** |  | 2025-11-09 | 2025-12-31 |  |  |
| MOD-PWN-VC-37 |  | Valve Chamber Excavation for Potable Water Network Zone 2 | 12d | 2025-11-09 | 2025-11-22 | MOD-PWN-PI-143 | 9d |
| MOD-PWN-VC-47 |  | RC Slab, Walls, or Precast Chambers for Potable Water Network Zone 2 | 15d | 2025-11-23 | 2025-12-09 | MOD-PWN-VC-37, A102760 | 24d |
| MOD-PWN-VC-17 |  | Butterfly Valves (355, 500, 630 mm) for Potable Water Network Zone 2 | 12d | 2025-12-07 | 2025-12-20 | MOD-PWN-VC-7 SS, A102750 | 15d |
| MOD-PWN-VC-27 |  | 3-exit (2 x 2.5-inch and 1 x 4-inch) dry vacuum cylinder detachable fire nozzle for Potable Water Network Zone 2 | 12d | 2025-12-07 | 2025-12-20 | MOD-PWN-VC-17 SS | 15d |
| MOD-PWN-VC-7 |  | Gate Valves (225–710 mm) for Potable Water Network Zone 2 | 12d | 2025-12-07 | 2025-12-20 | A102750 | 15d |
| MOD-PWN-VC-57 |  | Fixing Covers, Gratings, Frames for Potable Water Network Zone 2 | 6d | 2025-12-21 | 2025-12-27 | MOD-PWN-VC-47, MOD-PWN-VC-27 | 15d |
| MOD-PWN-VC-67 |  | Tagging & Painting for Potable Water Network Zone 2 | 4d | 2025-12-28 | 2025-12-31 | MOD-PWN-VC-57 | 15d |
|  | 3 | **Flow Meter Installation** |  | 2025-11-23 | 2026-01-13 |  |  |
| MOD-PWN-FM-5 |  | Chamber Excavation (280 mm, 300 mm, 500 mm, 800 mm) for Potable Water Network Zone 2 | 8d | 2025-11-23 | 2025-12-01 | MOD-PWN-VC-37 | 11d |
| MOD-PWN-FM-15 |  | RC or Precast Chamber Construction for Potable Water Network Zone 2 | 7d | 2025-12-02 | 2025-12-09 | MOD-PWN-FM-5, A102760 | 11d |
| MOD-PWN-FM-25 |  | Flowmeter Installation & Pipe Integration for Potable Water Network Zone 2 | 12d | 2025-12-18 | 2025-12-31 | MOD-PWN-FM-15, A102620 | 4d |
| MOD-PWN-FM-35 |  | Wiring/Cabling if applicable for Potable Water Network Zone 2 | 8d | 2026-01-01 | 2026-01-10 | MOD-PWN-FM-25 | 4d |
| MOD-PWN-FM-45 |  | Calibration & Commissioning for Potable Water Network Zone 2 | 3d | 2026-01-11 | 2026-01-13 | MOD-PWN-FM-35 | 4d |
|  | 4 | **Washout & Air Valve Chambers** |  | 2025-11-09 | 2026-01-07 |  |  |
| MOD-PWN-WA-7 |  | Chamber Excavation (280 mm to 710 mm) for Potable Water Network Zone 2 | 12d | 2025-11-09 | 2025-11-22 | MOD-PWN-VC-37 SS | 9d |
| MOD-PWN-WA-17 |  | RC Blinding + Base + Walls for Potable Water Network Zone 2 | 5d | 2025-11-23 | 2025-11-27 | MOD-PWN-WA-7 | 9d |
| MOD-PWN-WA-27 |  | Pipe Work for Potable Water Network Zone 2 | 14d | 2025-11-29 | 2025-12-14 | MOD-PWN-WA-17, A102740, A1650 | 9d |
| MOD-PWN-WA-37 |  | Washout (Valve + Outlet) Installation for Potable Water Network Zone 2 | 10d | 2025-12-15 | 2025-12-25 | MOD-PWN-WA-27, A102750 | 9d |
| MOD-PWN-WA-47 |  | Air Valve Rooms (Valve + Outlet) Installation for Potable Water Network Zone 2 | 5d | 2025-12-27 | 2025-12-31 | MOD-PWN-WA-37, A102780 | 9d |
| MOD-PWN-WA-57 |  | Covers, Ladders & Tags for Potable Water Network Zone 2 | 4d | 2026-01-01 | 2026-01-05 | MOD-PWN-WA-47 | 9d |
| MOD-PWN-WA-67 |  | Backfilling & Final Finishing for Potable Water Network Zone 2 | 2d | 2026-01-06 | 2026-01-07 | MOD-PWN-WA-57, MOD-GEI-PL-001 | 9d |
|  | 2 | **Irrigation Network Zone 2** |  | 2025-10-19 | 2026-01-18 |  |  |

| ID | WBS | Task | Duration | Start | Finish | Predecessors | Total float |
| --- | --- | --- | --- | --- | --- | --- | --- |
|  | 1 | **Excavation, Pipe Laying & Backfilling** |  | 2025-10-19 | 2025-12-14 |  |  |
| MOD-IRN-EB-330 |  | Trench Excavation for Irrigation Network Zone 2 | 21d | 2025-10-19 | 2025-11-08 | A102500, A102190 | 35d |
| MOD-IRN-EB-340 |  | Lean Concrete / Pipe Bedding with Type B Material for Irrigation Network Zone 2 | 9d | 2025-11-09 | 2025-11-17 | MOD-IRN-EB-330 | 35d |
| MOD-IRN-EB-350 |  | HDPE Pipe Laying (125 mm to 630 mm) for Irrigation Network Zone 2 | 21d | 2025-11-18 | 2025-12-08 | MOD-IRN-EB-340, A1650 | 35d |
| MOD-IRN-EB-360 |  | Test (Pressure-slope) for Irrigation Network Zone 2 | 2d | 2025-12-09 | 2025-12-10 | MOD-IRN-EB-350 | 35d |
| MOD-IRN-EB-370 |  | Coating / Wrapping for Irrigation Network Zone 2 | 2d | 2025-12-11 | 2025-12-12 | MOD-IRN-EB-360 | 35d |
| MOD-IRN-EB-380 |  | Backfilling & Warrning Tape for Irrigation Network Zone 2 | 2d | 2025-12-13 | 2025-12-14 | MOD-IRN-EB-370, MOD-IRN-EB-370 FF, MOD-GEI-PL-001 | 35d |
|  | 2 | **Valves and Appurtenances** |  | 2025-12-07 | 2025-12-29 |  |  |
| MOD-IRN-VA-5 |  | Supply & Installation of Valves (Gate Valve) for Irrigation Network Zone 2 | 8d | 2025-12-07 | 2025-12-15 | A102750 | 0d |
| MOD-IRN-VA-15 |  | Supply & Installation of Valves (Butterfly Valve) for Irrigation Network Zone 2 | 8d | 2025-12-11 | 2025-12-20 | MOD-IRN-VA-5 SS+4d, A102750 | 0d |
| MOD-IRN-VA-25 |  | Installation of Flanges, Bolts, Collars, Nuts for Irrigation Network Zone 2 | 4d | 2025-12-21 | 2025-12-24 | MOD-IRN-VA-15 | 0d |
| MOD-IRN-VA-35 |  | Valve Pressure Testing for Irrigation Network Zone 2 | 2d | 2025-12-25 | 2025-12-27 | MOD-IRN-VA-25 | 17d |
| MOD-IRN-VA-45 |  | Support Brackets/Anchor Blocks for Irrigation Network Zone 2 | 2d | 2025-12-28 | 2025-12-29 | MOD-IRN-VA-35 | 17d |
|  | 3 | **Valve Rooms** |  | 2025-12-21 | 2026-01-18 |  |  |
| MOD-IRN-VR-7 |  | Excavation for Valve Room Valve Chamber for Irrigation Network Zone 2 | 4d | 2025-12-21 | 2025-12-24 | MOD-IRN-VA-25 SS, A1600 | 0d |
| MOD-IRN-VR-17 |  | Blinding Concrete Valve Chamber for Irrigation Network Zone 2 | 2d | 2025-12-25 | 2025-12-27 | MOD-IRN-VR-7, A103770 | 0d |
| MOD-IRN-VR-27 |  | RCC Base Slab & Chamber Walls Valve Chamber for Irrigation Network Zone 2 | 4d | 2025-12-28 | 2025-12-31 | MOD-IRN-VR-17, A102760 | 0d |
| MOD-IRN-VR-37 |  | Block Wall Construction (if any) Valve Chamber for Irrigation Network Zone 2 | 5d | 2026-01-01 | 2026-01-06 | MOD-IRN-VR-27 | 0d |
| MOD-IRN-VR-47 |  | Installation of Valve inside the Room Valve Chamber for Irrigation Network Zone 2 | 5d | 2026-01-07 | 2026-01-12 | MOD-IRN-VR-37 | 0d |
| MOD-IRN-VR-57 |  | Fixing Frame & Cover Valve Chamber for Irrigation Network Zone 2 | 2d | 2026-01-13 | 2026-01-14 | MOD-IRN-VR-47 | 0d |
| MOD-IRN-VR-67 |  | Backfilling and Finishing Valve Chamber for Irrigation Network Zone 2 | 3d | 2026-01-15 | 2026-01-18 | MOD-IRN-VR-57, MOD-GEI-PL-001 | 0d |
|  | 4 | **Washout Chambers** |  | 2025-12-21 | 2026-01-18 |  |  |
| MOD-IRN-WC-6 |  | Excavation for Chamber Washout Chamber for Irrigation Network Zone 2 | 5d | 2025-12-21 | 2025-12-25 | MOD-IRN-VA-25 SS, A1600 | 0d |
| MOD-IRN-WC-16 |  | Blinding Concrete Washout Chamber for Irrigation Network Zone 2 | 3d | 2025-12-27 | 2025-12-29 | MOD-IRN-WC-6, A103770 | 0d |
| MOD-IRN-WC-26 |  | Construction of RCC Base & Chamber Wall Washout Chamber for Irrigation Network Zone 2 | 7d | 2025-12-30 | 2026-01-06 | MOD-IRN-WC-16 | 0d |
| MOD-IRN-WC-36 |  | Washout Valve & Pipe Connection Washout Chamber for Irrigation Network Zone 2 | 5d | 2026-01-07 | 2026-01-12 | MOD-IRN-WC-26, A102750 | 0d |
| MOD-IRN-WC-46 |  | Manhole Frame, Cover & Ladder Fixing Washout Chamber for Irrigation Network Zone 2 | 3d | 2026-01-13 | 2026-01-15 | MOD-IRN-WC-36 | 0d |
| MOD-IRN-WC-56 |  | Backfilling & Reinstatement Washout Chamber for Irrigation Network Zone 2 | 2d | 2026-01-17 | 2026-01-18 | MOD-IRN-WC-46, MOD-GEI-PL-001 | 0d |
|  | 5 | **Air Valve Chambers** |  | 2025-12-25 | 2026-01-18 |  |  |
| MOD-IRN-AC-5 |  | Chamber Excavation Air Valve Chamber for Irrigation Network Zone 2 | 4d | 2025-12-25 | 2025-12-29 | MOD-IRN-VA-25 | 0d |
| MOD-IRN-AC-15 |  | Blinding & RCC Base Air Valve Chamber for Irrigation Network Zone 2 | 4d | 2025-12-30 | 2026-01-03 | MOD-IRN-AC-5, A103770 | 0d |
| MOD-IRN-AC-25 |  | Wall Casting / Blockwork Air Valve Chamber for Irrigation Network Zone 2 | 6d | 2026-01-04 | 2026-01-10 | MOD-IRN-AC-15 | 0d |
| MOD-IRN-AC-35 |  | Air Valve Installation (280–630 mm) Air Valve Chamber for Irrigation Network Zone 2 | 5d | 2026-01-11 | 2026-01-15 | MOD-IRN-AC-25, A102780 | 0d |
| MOD-IRN-AC-45 |  | Cover Fixing & Finishing Air Valve Chamber for Irrigation Network Zone 2 | 2d | 2026-01-17 | 2026-01-18 | MOD-IRN-AC-35 | 0d |
|  | 6 | **Flow Meter Chambers** |  | 2025-12-21 | 2026-01-18 |  |  |
| MOD-IRN-FC-6 |  | Chamber Excavation Flow Meter Chamber for Irrigation Network Zone 2 | 6d | 2025-12-21 | 2025-12-27 | MOD-IRN-VA-25 SS | 0d |
| MOD-IRN-FC-16 |  | RCC Base & Wall Construction Flow Meter Chamber for Irrigation Network Zone 2 | 5d | 2025-12-28 | 2026-01-01 | MOD-IRN-FC-6, A102760 | 0d |
| MOD-IRN-FC-26 |  | Flow Meter Installation (280, 300, 500 mm) Flow Meter Chamber for Irrigation Network Zone 2 | 5d | 2026-01-03 | 2026-01-07 | MOD-IRN-FC-16, A102620 | 0d |
| MOD-IRN-FC-36 |  | Integration with Pipework Flow Meter Chamber for Irrigation Network Zone 2 | 2d | 2026-01-08 | 2026-01-10 | MOD-IRN-FC-26 | 0d |
| MOD-IRN-FC-46 |  | Testing & Calibration Flow Meter Chamber for Irrigation Network Zone 2 | 4d | 2026-01-11 | 2026-01-14 | MOD-IRN-FC-36 | 0d |
| MOD-IRN-FC-56 |  | Cover and Access Arrangement Flow Meter Chamber for Irrigation Network Zone 2 | 3d | 2026-01-15 | 2026-01-18 | MOD-IRN-FC-46 | 0d |
|  | 3 | **Rainwater Collection Ponds Zone 2** |  | 2026-01-19 | 2026-12-08 |  |  |
|  | 10 | **Excavation for Rainwater Drainage Pond** |  | 2026-01-19 | 2026-03-14 |  |  |
|  | 11 | **Deep excavation, backfill, disposal for pond formation** |  | 2026-01-19 | 2026-03-14 |  |  |
| MOD-RCP-ER-8 |  | Mark and fence pond boundary for Rainwater Collection Ponds Zone 2 | 3d | 2026-01-19 | 2026-01-21 | MIL-0006, MOD-GEI-SF-001 | 79.8d |
| MOD-RCP-ER-18 |  | Excavate in layers to final depth for Rainwater Collection Ponds Zone 2 | 12d | 2026-01-22 | 2026-02-04 | MOD-RCP-ER-8 | 338.8d |
| MOD-RCP-ER-28 |  | Dewater during excavation for Rainwater Collection Ponds Zone 2 | 5d | 2026-02-05 | 2026-02-10 | MOD-RCP-ER-18 | 338.8d |
| MOD-RCP-ER-38 |  | Place warning tapes for Rainwater Collection Ponds Zone 2 | 6d | 2026-02-11 | 2026-02-19 | MOD-RCP-ER-28 | 338.8d |
| MOD-RCP-ER-48 |  | Dispose of rock/materials to approved dump area for Rainwater Collection Ponds Zone 2 | 7d | 2026-02-19 | 2026-03-05 | MOD-RCP-ER-38 | 338.8d |
| MOD-RCP-ER-58 |  | Backfill selected areas as per design for Rainwater Collection Ponds Zone 2 | 2d | 2026-03-07 | 2026-03-10 | MOD-RCP-ER-48, MOD-GEI-PL-001 | 338.8d |
| MOD-RCP-ER-68 |  | Final trimming and profiling for Rainwater Collection Ponds Zone 2 | 2d | 2026-03-10 | 2026-03-14 | MOD-RCP-ER-58 | 338.8d |
|  | 1 | **General Site Preparation** |  | 2026-01-22 | 2026-06-08 |  |  |
| MOD-RCP-GS-43 |  | Site demarcation for Rainwater Collection Ponds Zone 2 | 21d | 2026-01-22 | 2026-02-15 | MOD-RCP-ER-8 | 80.8d |
| MOD-RCP-GS-53 |  | Clearing and grubbing for Rainwater Collection Ponds Zone 2 | 21d | 2026-02-16 | 2026-03-30 | MOD-RCP-GS-43 | 80.8d |
| MOD-RCP-GS-83 |  | Earthwork excavation (other than topsoil or rock) - Zone 2 (2 Ponds) for Rainwater Collection Ponds Zone 2 | 21d | 2026-04-15 | 2026-05-10 | MOD-RCP-GS-53, MOD-RCP-GS-183 | 66.8d |
| MOD-RCP-GS-93 |  | Transport and disposal to approved locations - Zone 2 (2 Ponds) for Rainwater Collection Ponds Zone 2 | 21d | 2026-05-10 | 2026-06-08 | MOD-RCP-GS-83 | 118.8d |
|  | 2 | **Backfilling Works** |  | 2026-06-08 | 2026-08-23 |  |  |
| MOD-RCP-BW-5 |  | Select material from excavation or import approved material for Rainwater Collection Ponds Zone 2 | 15d | 2026-06-08 | 2026-06-25 | MOD-RCP-GS-93 | 118.8d |
| MOD-RCP-BW-15 |  | Place in layers not exceeding 300mm for Rainwater Collection Ponds Zone 2 | 21d | 2026-06-25 | 2026-07-20 | MOD-RCP-BW-5 | 209.8d |
| MOD-RCP-BW-25 |  | Compact each layer to required density for Rainwater Collection Ponds Zone 2 | 20d | 2026-07-20 | 2026-08-12 | MOD-RCP-BW-15 | 209.8d |
| MOD-RCP-BW-35 |  | Conduct field density tests for Rainwater Collection Ponds Zone 2 | 4d | 2026-08-12 | 2026-08-17 | MOD-RCP-BW-25 | 209.8d |
| MOD-RCP-BW-45 |  | Final leveling and approval for Rainwater Collection Ponds Zone 2 | 5d | 2026-08-17 | 2026-08-23 | MOD-RCP-BW-35 | 209.8d |
|  | 12 | **Geotextile & Bedding** |  | 2026-06-25 | 2026-09-10 |  |  |
|  | 13 | **Installation of geotextile lining and coarse sand bedding** |  | 2026-06-25 | 2026-09-10 |  |  |
| MOD-RCP-GB-5 |  | Trim subgrade to required level for Rainwater Collection Ponds Zone 2 | 7d | 2026-06-25 | 2026-07-04 | MOD-RCP-BW-5 | 118.8d |
| MOD-RCP-GB-15 |  | Lay HDPE geotextile membrane over compacted soil for Rainwater Collection Ponds Zone 2 | 21d | 2026-07-04 | 2026-07-28 | MOD-RCP-GB-5 | 118.8d |
| MOD-RCP-GB-25 |  | Place 500mm thick coarse sand bedding for Rainwater Collection Ponds Zone 2 | 21d | 2026-07-28 | 2026-08-22 | MOD-RCP-GB-15 | 118.8d |
| MOD-RCP-GB-35 |  | Compact and level bedding for Rainwater Collection Ponds Zone 2 | 17d | 2026-08-22 | 2026-09-10 | MOD-RCP-GB-25 | 118.8d |
|  | 3 | **Concrete Structures** |  | 2026-09-10 | 2026-11-03 |  |  |
|  | 4 | **Construction of pond slab, walls, vertical structures** |  | 2026-09-10 | 2026-11-03 |  |  |

| ID | WBS | Task | Duration | Start | Finish | Predecessors | Total float |
| --- | --- | --- | --- | --- | --- | --- | --- |
| MOD-RCP-CS-10 |  | Clean the subgrade for Rainwater Collection Ponds Zone 2 | 2d | 2026-09-10 | 2026-09-13 | MOD-RCP-GB-15 SS, MOD-RCP-GB-35 | 118.8d |
| MOD-RCP-CS-20 |  | Lay 100mm thick blinding (C15) for Rainwater Collection Ponds Zone 2 | 3d | 2026-09-13 | 2026-09-16 | MOD-RCP-CS-10 | 118.8d |
| MOD-RCP-CS-30 |  | Install formwork and reinforcement for Rainwater Collection Ponds Zone 2 | 8d | 2026-09-16 | 2026-09-27 | MOD-RCP-CS-20 | 118.8d |
| MOD-RCP-CS-40 |  | Cast base slab with C20 concrete (300–500mm thick) for Rainwater Collection Ponds Zone 2 | 4d | 2026-09-27 | 2026-10-01 | MOD-RCP-CS-30 | 118.8d |
| MOD-RCP-CS-50 |  | Construct sub-walls (150–300mm thick) for Rainwater Collection Ponds Zone 2 | 7d | 2026-10-01 | 2026-10-10 | MOD-RCP-CS-40 | 118.8d |
| MOD-RCP-CS-60 |  | Construct vertical structures (0.2–1.22m wide) for Rainwater Collection Ponds Zone 2 | 9d | 2026-10-10 | 2026-10-20 | MOD-RCP-CS-50 | 118.8d |
| MOD-RCP-CS-70 |  | Remove formwork after curing for Rainwater Collection Ponds Zone 2 | 3d | 2026-10-20 | 2026-10-24 | MOD-RCP-CS-60 | 148.8d |
| MOD-RCP-CS-80 |  | Apply power floating finish for Rainwater Collection Ponds Zone 2 | 2d | 2026-10-24 | 2026-10-26 | MOD-RCP-CS-70 | 148.8d |
| MOD-RCP-CS-90 |  | Apply waterproofing, bitumen, screed, perimeter lining for Rainwater Collection Ponds Zone 2 | 7d | 2026-10-26 | 2026-11-03 | MOD-RCP-CS-80 | 148.8d |
|  | 5 | **Energy Dissipation & Siphon Structures** |  | 2026-10-20 | 2026-12-08 |  |  |
|  | 6 | **Siphon pipes, energy dissipators, and associated civil works** |  | 2026-10-20 | 2026-12-08 |  |  |
| MOD-RCP-ED-8 |  | Excavate for low-level areas for Rainwater Collection Ponds Zone 2 | 3d | 2026-10-20 | 2026-10-24 | MOD-RCP-CS-60 | 118.8d |
| MOD-RCP-ED-18 |  | Lay granular bedding and compact for Rainwater Collection Ponds Zone 2 | 11d | 2026-10-24 | 2026-11-05 | MOD-RCP-ED-8 | 118.8d |
| MOD-RCP-ED-28 |  | Install siphon pipe with DI 90° bends for Rainwater Collection Ponds Zone 2 | 10d | 2026-11-05 | 2026-11-17 | MOD-RCP-ED-18 | 118.8d |
| MOD-RCP-ED-38 |  | Place coarse gravel tamping for Rainwater Collection Ponds Zone 2 | 8d | 2026-11-17 | 2026-11-26 | MOD-RCP-ED-28 | 118.8d |
| MOD-RCP-ED-48 |  | Construct reinforced concrete side walls for Rainwater Collection Ponds Zone 2 | 6d | 2026-11-26 | 2026-12-03 | MOD-RCP-ED-38 | 118.8d |
| MOD-RCP-ED-58 |  | Brickwork and finishing for Rainwater Collection Ponds Zone 2 | 2d | 2026-12-03 | 2026-12-06 | MOD-RCP-ED-48 | 118.8d |
| MOD-RCP-ED-68 |  | Install energy dissipators (gabion baffles, riprap) for Rainwater Collection Ponds Zone 2 | 2d | 2026-12-06 | 2026-12-08 | MOD-RCP-ED-58 | 118.8d |
|  | 4 | **Road Crossing Zone 2** |  | 2026-01-22 | 2026-10-13 |  |  |
|  | 14 | **uPVC Road Crossing Pipes** |  | 2026-01-22 | 2026-06-22 |  |  |
|  | 15 | **Installation of uPVC pipes of various diameters crossing roadways** |  | 2026-01-22 | 2026-06-22 |  |  |
| MOD-ROC-PV-10 |  | Demarcation and traffic diversion (if required) for Road Crossing Zone 2 | 6d | 2026-01-22 | 2026-01-28 | MOD-GEI-SF-001, MOD-RCP-ER-8 | 79.8d |
| MOD-ROC-PV-20 |  | Saw cutting and removal of asphalt (if applicable) for Road Crossing Zone 2 | 12d | 2026-01-29 | 2026-02-11 | MOD-ROC-PV-10 | 79.8d |
| MOD-ROC-PV-30 |  | Excavation across road width to required depth for Road Crossing Zone 2 | 21d | 2026-02-12 | 2026-03-26 | MOD-ROC-PV-20, A1600 | 79.8d |
| MOD-ROC-PV-40 |  | Preparation of trench base with compacted bedding for Road Crossing Zone 2 | 15d | 2026-03-26 | 2026-04-13 | MOD-ROC-PV-30 | 79.8d |
| MOD-ROC-PV-50 |  | Laying of uPVC pipe (300mm, 315mm, 400mm, 600mm dia) for Road Crossing Zone 2 | 21d | 2026-04-13 | 2026-05-07 | MOD-ROC-PV-40 | 79.8d |
| MOD-ROC-PV-60 |  | Placement of supports and protection around the pipe for Road Crossing Zone 2 | 10d | 2026-05-07 | 2026-05-19 | MOD-ROC-PV-50 | 79.8d |
| MOD-ROC-PV-70 |  | Testing of installed pipeline for Road Crossing Zone 2 | 6d | 2026-05-19 | 2026-05-26 | MOD-ROC-PV-60 | 79.8d |
| MOD-ROC-PV-80 |  | Backfilling and compaction in layers for Road Crossing Zone 2 | 13d | 2026-05-26 | 2026-06-15 | MOD-ROC-PV-70, MOD-GEI-PL-001 | 79.8d |
| MOD-ROC-PV-90 |  | Reinstatement of road surface for Road Crossing Zone 2 | 6d | 2026-06-15 | 2026-06-22 | MOD-ROC-PV-80 | 79.8d |
|  | 16 | **GRP Road Crossing Pipes** |  | 2026-06-22 | 2026-10-13 |  |  |
|  | 17 | **Installation of GRP pipes (800mm–1000mm dia) for road crossings** |  | 2026-06-22 | 2026-10-13 |  |  |
| MOD-ROC-GR-10 |  | Set out location and coordinate with road authority for Road Crossing Zone 2 | 5d | 2026-06-22 | 2026-06-28 | MOD-ROC-PV-10, MOD-ROC-PV-90 | 79.8d |
| MOD-ROC-GR-20 |  | Excavate trench across road at designed depth for Road Crossing Zone 2 | 12d | 2026-06-28 | 2026-07-12 | MOD-ROC-GR-10 | 79.8d |
| MOD-ROC-GR-30 |  | Lay compacted granular bedding for Road Crossing Zone 2 | 16d | 2026-07-12 | 2026-07-30 | MOD-ROC-GR-20 | 79.8d |
| MOD-ROC-GR-40 |  | Install GRP pipe (800mm & 1000mm dia) for Road Crossing Zone 2 | 21d | 2026-07-30 | 2026-08-24 | MOD-ROC-GR-30 | 79.8d |
| MOD-ROC-GR-50 |  | Provide structural supports and closure at both ends for Road Crossing Zone 2 | 9d | 2026-08-24 | 2026-09-03 | MOD-ROC-GR-40, A102810 | 79.8d |
| MOD-ROC-GR-60 |  | Perform leak testing as per specifications for Road Crossing Zone 2 | 5d | 2026-09-03 | 2026-09-09 | MOD-ROC-GR-50 | 79.8d |
| MOD-ROC-GR-70 |  | Backfill and compact in layers for Road Crossing Zone 2 | 15d | 2026-09-09 | 2026-09-28 | MOD-ROC-GR-60, MOD-GEI-PL-001 | 79.8d |
| MOD-ROC-GR-80 |  | Reinstate road surface (asphalt/concrete) for Road Crossing Zone 2 | 8d | 2026-09-28 | 2026-10-07 | MOD-ROC-GR-70 | 79.8d |
| MOD-ROC-GR-90 |  | Final inspection and approval by relevant authority for Road Crossing Zone 2 | 5d | 2026-10-07 | 2026-10-13 | MOD-ROC-GR-80 | 79.8d |
|  | 6 | **Zone 1** |  | 2025-10-13 | 2027-02-08 |  |  |
|  | 1 | **Sewerage Network Zone 1** |  | 2025-10-13 | 2026-12-28 |  |  |
|  | 1 | **Pipework: Supply, Installation, and Testing** |  | 2025-10-19 | 2026-02-03 |  |  |
|  | 1 | **UPVC Pipes Installation (150mm–315mm)** |  | 2025-10-19 | 2026-01-26 |  |  |
| MOD-SWN-PW-665 |  | Excavation and Trenching UPVC for Sewerage Network Zone 1 | 21d | 2025-10-19 | 2025-11-08 | A102500, A102190, A1600 | 376.8d |
| MOD-SWN-PW-675 |  | Lean Concrete / Bedding UPVC for Sewerage Network Zone 1 | 21d | 2025-11-09 | 2025-11-29 | MOD-SWN-PW-665 | 376.8d |
| MOD-SWN-PW-625 |  | UPVC Pipes Installation (150mm–315mm) UPVC for Sewerage Network Zone 1 | 13d | 2025-11-30 | 2025-12-12 | MOD-SWN-PW-665, MOD-SWN-PW-675, A1650 | 376.8d |
| MOD-SWN-PW-685 |  | Test (Pressure - Slope) UPVC for Sewerage Network Zone 1 | 15d | 2025-12-13 | 2025-12-27 | MOD-SWN-PW-625 | 384.8d |
| MOD-SWN-PW-695 |  | Coating / Wrapping UPVC for Sewerage Network Zone 1 | 15d | 2025-12-28 | 2026-01-11 | MOD-SWN-PW-685 | 384.8d |
| MOD-SWN-PW-655 |  | Backfilling & Warrning Tape UPVC for Sewerage Network Zone 1 | 15d | 2026-01-12 | 2026-01-26 | MOD-SWN-PW-645, MOD-SWN-PW-695, MOD-GEI-PL-001 | 384.8d |
|  | 2 | **GRP Pipes Installation (400mm–700mm)** |  | 2025-10-19 | 2026-02-03 |  |  |
| MOD-SWN-PW-715 |  | Excavation and Trenching GRP for Sewerage Network Zone 1 | 21d | 2025-10-19 | 2025-11-08 | A102500, A102190, A1600 | 376.8d |
| MOD-SWN-PW-725 |  | Lean Concrete / Bedding GRP for Sewerage Network Zone 1 | 21d | 2025-11-09 | 2025-11-29 | MOD-SWN-PW-715, MOD-SWN-PW-715 FF | 376.8d |
| MOD-SWN-PW-635 |  | GRP Pipes Installation (400mm–700mm) GRP for Sewerage Network Zone 1 | 21d | 2025-11-30 | 2025-12-20 | MOD-SWN-PW-625 SS, MOD-SWN-PW-725, A102560, A1650 | 376.8d |
| MOD-SWN-PW-735 |  | Test (Pressure - Slope) GRP for Sewerage Network Zone 1 | 15d | 2025-12-21 | 2026-01-04 | MOD-SWN-PW-635 | 376.8d |
| MOD-SWN-PW-745 |  | Coating / Wrapping GRP for Sewerage Network Zone 1 | 15d | 2026-01-05 | 2026-01-19 | MOD-SWN-PW-735, MOD-SWN-PW-735 FF | 376.8d |
| MOD-SWN-PW-705 |  | Backfilling & Warrning Tape GRP for Sewerage Network Zone 1 | 15d | 2026-01-20 | 2026-02-03 | MOD-SWN-PW-745, MOD-SWN-PW-745 FF, MOD-GEI-PL-001 | 376.8d |
|  | 3 | **HDPE Pressure Pipes Installation (250mm–630mm)** |  | 2025-10-19 | 2026-02-03 |  |  |
| MOD-SWN-PW-765 |  | Excavation and Trenching HDPE for Sewerage Network Zone 1 | 21d | 2025-10-19 | 2025-11-08 | A102500, A102190, A1600 | 376.8d |
| MOD-SWN-PW-775 |  | Lean Concrete / Bedding HDPE for Sewerage Network Zone 1 | 21d | 2025-11-09 | 2025-11-29 | MOD-SWN-PW-765, MOD-SWN-PW-765 FF | 376.8d |
| MOD-SWN-PW-645 |  | HDPE Pressure Pipes Installation (250mm–630mm) HDPE for Sewerage Network Zone 1 | 21d | 2025-11-30 | 2025-12-20 | MOD-SWN-PW-635 SS, MOD-SWN-PW-775, A1650 | 376.8d |
| MOD-SWN-PW-785 |  | Test (Pressure - Slope) HDPE for Sewerage Network Zone 1 | 15d | 2025-12-21 | 2026-01-04 | MOD-SWN-PW-645 | 376.8d |
| MOD-SWN-PW-795 |  | Coating / Wrapping HDPE for Sewerage Network Zone 1 | 15d | 2026-01-05 | 2026-01-19 | MOD-SWN-PW-785, MOD-SWN-PW-785 FF | 376.8d |
| MOD-SWN-PW-755 |  | Backfilling & Warrning Tape HDPE for Sewerage Network Zone 1 | 15d | 2026-01-20 | 2026-02-03 | MOD-SWN-PW-795, MOD-SWN-PW-795 FF, MOD-GEI-PL-001 | 376.8d |
|  | 2 | **Fittings and Valves** |  | 2025-12-21 | 2026-01-20 |  |  |
| MOD-SWN-FV-001 |  | Supply & Installation of HDPE Elbows for Sewerage Network Zone 1 | 6d | 2025-12-21 | 2025-12-27 | MOD-SWN-PW-645 | 310.8d |
| MOD-SWN-FV-002 |  | Gate Valves Installation for Sewerage Network Zone 1 | 4d | 2025-12-28 | 2025-12-31 | MOD-SWN-FV-001, A102750 | 310.8d |
| MOD-SWN-FV-003 |  | Drain Valves Installation for Sewerage Network Zone 1 | 4d | 2026-01-01 | 2026-01-05 | MOD-SWN-FV-002, A102750 | 310.8d |
| MOD-SWN-FV-004 |  | Air Breather & Air Release Valves Installation for Sewerage Network Zone 1 | 10d | 2026-01-06 | 2026-01-17 | MOD-SWN-FV-003, A102750, A102780 | 310.8d |

| ID | WBS | Task | Duration | Start | Finish | Predecessors | Total float |
| --- | --- | --- | --- | --- | --- | --- | --- |
| MOD-SWN-FV-005 |  | Jointing & Piping Accessories Installation for Sewerage Network Zone 1 | 3d | 2026-01-18 | 2026-01-20 | MOD-SWN-FV-004 | 310.8d |
|  | 3 | **Valve & Flow Meter Chambers** |  | 2025-10-19 | 2026-02-10 |  |  |
|  | 1 | **Valve Chambers Construction** |  | 2025-10-19 | 2026-01-04 |  |  |
| MOD-SWN-PW-1135 |  | Excavation Valve Chamber for Sewerage Network Zone 1 | 21d | 2025-10-19 | 2025-11-08 | A102500, A102190, A1600 | 369.8d |
| MOD-SWN-PW-1145 |  | Lean Concrete / Bedding Valve Chamber for Sewerage Network Zone 1 | 21d | 2025-11-09 | 2025-11-29 | MOD-SWN-PW-1135, MOD-SWN-PW-1135 FF, MOD-SWN-PW-1135 SS | 369.8d |
| MOD-SWN-VF-164 |  | Valve Chambers Construction Valve Chamber for Sewerage Network Zone 1 | 6d | 2025-11-30 | 2025-12-05 | MOD-SWN-PW-1145 | 369.8d |
| MOD-SWN-PW-1155 |  | Test Valve Chamber for Sewerage Network Zone 1 | 15d | 2025-12-06 | 2025-12-20 | MOD-SWN-VF-164 | 406.8d |
| MOD-SWN-PW-1125 |  | Backfilling Valve Chamber for Sewerage Network Zone 1 | 15d | 2025-12-21 | 2026-01-04 | MOD-SWN-PW-1155, MOD-GEI-PL-001 | 406.8d |
|  | 2 | **Water Drain Chambers Construction** |  | 2025-10-19 | 2026-01-23 |  |  |
| MOD-SWN-PW-1175 |  | Excavation Water Drain Chamber for Sewerage Network Zone 1 | 21d | 2025-10-19 | 2025-11-08 | A102500, A102190, A1600 | 375.8d |
| MOD-SWN-PW-1185 |  | Lean Concrete / Bedding Water Drain Chamber for Sewerage Network Zone 1 | 21d | 2025-11-09 | 2025-11-29 | MOD-SWN-PW-1175, MOD-SWN-PW-1175 FF, MOD-SWN-PW-1175 SS | 375.8d |
| MOD-SWN-VF-174 |  | Water Drain Chambers Construction Water Drain Chamber for Sewerage Network Zone 1 | 19d | 2025-12-06 | 2025-12-24 | MOD-SWN-VF-164, MOD-SWN-PW-1185 | 369.8d |
| MOD-SWN-PW-1195 |  | Test Water Drain Chamber for Sewerage Network Zone 1 | 15d | 2025-12-25 | 2026-01-08 | MOD-SWN-VF-174 | 387.8d |
| MOD-SWN-PW-1165 |  | Backfilling Water Drain Chamber for Sewerage Network Zone 1 | 15d | 2026-01-09 | 2026-01-23 | MOD-SWN-PW-1195, MOD-GEI-PL-001 | 387.8d |
|  | 3 | **Discharge Chambers Construction** |  | 2025-10-19 | 2026-02-05 |  |  |
| MOD-SWN-PW-1215 |  | Excavation Discharge Chamber for Sewerage Network Zone 1 | 21d | 2025-10-19 | 2025-11-08 | A102500, A102190, A1600 | 394.8d |
| MOD-SWN-PW-1225 |  | Lean Concrete / Bedding Discharge Chamber for Sewerage Network Zone 1 | 21d | 2025-11-09 | 2025-11-29 | MOD-SWN-PW-1215, MOD-SWN-PW-1215 FF, MOD-SWN-PW-1215 SS | 394.8d |
| MOD-SWN-VF-184 |  | Discharge Chambers Construction Discharge Chamber for Sewerage Network Zone 1 | 13d | 2025-12-25 | 2026-01-06 | MOD-SWN-VF-174, MOD-SWN-PW-1225 | 369.8d |
| MOD-SWN-PW-1235 |  | Test Discharge Chamber for Sewerage Network Zone 1 | 15d | 2026-01-07 | 2026-01-21 | MOD-SWN-VF-184 | 374.8d |
| MOD-SWN-PW-1205 |  | Backfilling Discharge Chamber for Sewerage Network Zone 1 | 15d | 2026-01-22 | 2026-02-05 | MOD-SWN-PW-1235, MOD-GEI-PL-001 | 374.8d |
|  | 4 | **Flow Meter Chambers Construction** |  | 2025-10-19 | 2026-02-10 |  |  |
| MOD-SWN-PW-1255 |  | Excavation Flow Meter Chamber for Sewerage Network Zone 1 | 21d | 2025-10-19 | 2025-11-08 | A102500, A102190, A1600 | 407.8d |
| MOD-SWN-PW-1265 |  | Lean Concrete / Bedding Flow Meter Chamber for Sewerage Network Zone 1 | 21d | 2025-11-09 | 2025-11-29 | MOD-SWN-PW-1255, MOD-SWN-PW-1255 FF, MOD-SWN-PW-1255 SS | 407.8d |
| MOD-SWN-VF-194 |  | Flow Meter Chambers Construction Flow Meter Chamber for Sewerage Network Zone 1 | 5d | 2026-01-07 | 2026-01-11 | MOD-SWN-VF-184, MOD-SWN-PW-1265 | 369.8d |
| MOD-SWN-PW-1275 |  | Test Flow Meter Chamber for Sewerage Network Zone 1 | 15d | 2026-01-12 | 2026-01-26 | MOD-SWN-VF-194 | 369.8d |
| MOD-SWN-PW-1245 |  | Backfilling Flow Meter Chamber for Sewerage Network Zone 1 | 15d | 2026-01-27 | 2026-02-10 | MOD-SWN-PW-1275, MOD-GEI-PL-001 | 369.8d |
|  | 4 | **Manholes** |  | 2025-10-19 | 2026-01-08 |  |  |
| MOD-SWN-MH-005 |  | Depth Variation for Manholes for Sewerage Network Zone 1 | 8d | 2025-12-18 | 2025-12-27 | A1480, A102600 | 331.8d |
|  | 1 | **1200mm GRP Manholes with Backdrop** |  | 2025-10-19 | 2025-12-24 |  |  |
| MOD-SWN-PW-1295 |  | Excavation 1.2m GRP for Sewerage Network Zone 1 | 21d | 2025-10-19 | 2025-11-08 | A102500, A102190, A1600 | 402.8d |
| MOD-SWN-PW-1305 |  | Lean Concrete / Bedding 1.2m GRP for Sewerage Network Zone 1 | 5d | 2025-11-09 | 2025-11-13 | MOD-SWN-PW-1295, MOD-SWN-PW-1295 FF, MOD-SWN-PW-1295 SS | 402.8d |
| MOD-SWN-MH-105 |  | 1200mm GRP Manholes with Backdrop 1.2m GRP for Sewerage Network Zone 1 | 21d | 2025-11-14 | 2025-12-04 | MOD-SWN-PW-1305 | 402.8d |
| MOD-SWN-PW-1315 |  | Test 1.2m GRP for Sewerage Network Zone 1 | 5d | 2025-12-05 | 2025-12-09 | MOD-SWN-MH-105 | 417.8d |
| MOD-SWN-PW-1285 |  | Backfilling 1.2m GRP for Sewerage Network Zone 1 | 15d | 2025-12-10 | 2025-12-24 | MOD-SWN-PW-1315, MOD-GEI-PL-001 | 417.8d |
|  | 2 | **1500mm GRP Manholes (Standard & Backdrop)** |  | 2025-10-19 | 2025-12-29 |  |  |
| MOD-SWN-PW-1335 |  | Excavation 1.5m GRP for Sewerage Network Zone 1 | 21d | 2025-10-19 | 2025-11-08 | A102500, A102190, A1600 | 407.8d |
| MOD-SWN-PW-1345 |  | Lean Concrete / Bedding 1.5m GRP for Sewerage Network Zone 1 | 5d | 2025-11-09 | 2025-11-13 | MOD-SWN-PW-1335, MOD-SWN-PW-1335 FF, MOD-SWN-PW-1335 SS | 407.8d |
| MOD-SWN-MH-115 |  | 1500mm GRP Manholes (Standard & Backdrop) 1.5m GRP for Sewerage Network Zone 1 | 21d | 2025-11-19 | 2025-12-09 | MOD-SWN-MH-105 SS+5d, MOD-SWN-PW-1345 | 402.8d |
| MOD-SWN-PW-1355 |  | Test 1.5m GRP for Sewerage Network Zone 1 | 5d | 2025-12-10 | 2025-12-14 | MOD-SWN-MH-115 | 412.8d |
| MOD-SWN-PW-1325 |  | Backfilling 1.5m GRP for Sewerage Network Zone 1 | 15d | 2025-12-15 | 2025-12-29 | MOD-SWN-PW-1355, MOD-GEI-PL-001 | 412.8d |
|  | 3 | **1800mm GRP Manholes (Standard & Backdrop)** |  | 2025-10-19 | 2025-12-30 |  |  |
| MOD-SWN-PW-1375 |  | Excavation 1.8m GRP for Sewerage Network Zone 1 | 21d | 2025-10-19 | 2025-11-08 | A102500, A102190, A1600 | 412.8d |
| MOD-SWN-PW-1385 |  | Lean Concrete / Bedding 1.8m GRP for Sewerage Network Zone 1 | 5d | 2025-11-09 | 2025-11-13 | MOD-SWN-PW-1375, MOD-SWN-PW-1375 FF, MOD-SWN-PW-1375 SS | 412.8d |
| MOD-SWN-MH-125 |  | 1800mm GRP Manholes (Standard & Backdrop) 1.8m GRP for Sewerage Network Zone 1 | 17d | 2025-11-24 | 2025-12-10 | MOD-SWN-MH-115 SS+5d, MOD-SWN-PW-1385 | 402.8d |
| MOD-SWN-PW-1395 |  | Test 1.8m GRP for Sewerage Network Zone 1 | 5d | 2025-12-11 | 2025-12-15 | MOD-SWN-MH-125 | 411.8d |
| MOD-SWN-PW-1365 |  | Backfilling 1.8m GRP for Sewerage Network Zone 1 | 15d | 2025-12-16 | 2025-12-30 | MOD-SWN-PW-1395, MOD-GEI-PL-001 | 411.8d |
|  | 4 | **2000mm GRP Manholes (Standard & Backdrop)** |  | 2025-10-19 | 2026-01-08 |  |  |
| MOD-SWN-PW-1415 |  | Excavation 2m GRP for Sewerage Network Zone 1 | 21d | 2025-10-19 | 2025-11-08 | A102500, A102190, A1600 | 417.8d |
| MOD-SWN-PW-1425 |  | Lean Concrete / Bedding 2m GRP for Sewerage Network Zone 1 | 5d | 2025-11-09 | 2025-11-13 | MOD-SWN-PW-1415, MOD-SWN-PW-1415 FF, MOD-SWN-PW-1415 SS | 417.8d |
| MOD-SWN-MH-135 |  | 2000mm GRP Manholes (Standard & Backdrop) 2m GRP for Sewerage Network Zone 1 | 21d | 2025-11-29 | 2025-12-19 | MOD-SWN-MH-125 SS+5d, MOD-SWN-PW-1425 | 402.8d |
| MOD-SWN-PW-1435 |  | Test 2m GRP for Sewerage Network Zone 1 | 5d | 2025-12-20 | 2025-12-24 | MOD-SWN-MH-135 | 402.8d |
| MOD-SWN-PW-1405 |  | Backfilling 2m GRP for Sewerage Network Zone 1 | 15d | 2025-12-25 | 2026-01-08 | MOD-SWN-PW-1435, MOD-GEI-PL-001 | 402.8d |
|  | 5 | **Pumping Stations** |  | 2025-10-13 | 2026-12-28 |  |  |
|  | 9 | **Perimeter Walls & Gates** |  | 2025-10-13 | 2025-12-11 |  |  |
| MOD-SWN-PS-045 |  | Perimeter wall – PS1 for Sewerage Network Zone 1 | 21d | 2025-10-13 | 2025-11-05 | A102810, A102340 | 241.8d |
| MOD-SWN-PS-046 |  | Perimeter wall – PS2 for Sewerage Network Zone 1 | 21d | 2025-11-06 | 2025-11-30 | MOD-SWN-PS-045, A102810, A103760 | 241.8d |
| MOD-SWN-PS-049 |  | Main entrance gates – Each PS for Sewerage Network Zone 1 | 10d | 2025-12-01 | 2025-12-11 | MOD-SWN-PS-046 | 241.8d |
| MOD-SWN-PS-050 |  | Personal entrance gate – Each PS for Sewerage Network Zone 1 | 4d | 2025-12-01 | 2025-12-04 | MOD-SWN-PS-049 SS | 241.8d |
|  | 1 | **Sewage Pumps and MCC System** |  | 2026-11-08 | 2026-12-28 |  |  |
| MOD-SWN-PS-002 |  | Sewage pumps incl. MCC, control panel, flow meters, transducers, switches, GRP piping, testing & installation – PS1 for | 11d | 2026-11-08 | 2026-11-19 | A102240, A102170, A1570, MOD-SWN-PS-050, A102700, A102640, A102620 | 38.6d |
| MOD-SWN-PS-003 |  | Sewage pumps (2x86 l/s, 1x325 l/s) incl. MCC – PS1 for Sewerage Network Zone 1 | 12d | 2026-11-21 | 2026-12-03 | MOD-SWN-PS-002, A102240, A102170, A102700, A102640 | 38.6d |
| MOD-SWN-PS-004 |  | Sewage pumps (2x55 l/s) incl. MCC – PS2 for Sewerage Network Zone 1 | 21d | 2026-12-05 | 2026-12-28 | MOD-SWN-PS-003, A102240, A102170, A102700, A102640 | 38.6d |
|  | 2 | **Odor Control System** |  | 2026-08-31 | 2026-10-25 |  |  |
| MOD-SWN-PS-0081 |  | Odor control system – All stations (PS1) for Sewerage Network Zone 1 | 23d | 2026-08-31 | 2026-09-28 | MOD-SWN-PS-043, A102180, A102720 | 53.8d |
| MOD-SWN-PS-0082 |  | Odor control system – All stations (PS2) for Sewerage Network Zone 1 | 23d | 2026-09-28 | 2026-10-25 | MOD-SWN-PS-0081, A102180, A102720 | 93.8d |
|  | 3 | **In-Line Booster Stations** |  | 2026-09-28 | 2026-12-10 |  |  |
| MOD-SWN-PS-010 |  | In-Line Booster Stations - Civil Works for Sewerage Network Zone 1 | 21d | 2026-09-28 | 2026-10-22 | MOD-SWN-PS-0081 | 53.8d |
| MOD-SWN-PS-1164 |  | In-Line Booster Stations - Mechanical Works for Sewerage Network Zone 1 | 21d | 2026-10-22 | 2026-11-16 | MOD-SWN-PS-010 | 53.8d |
| MOD-SWN-PS-1174 |  | In-Line Booster Stations - Electrical Works for Sewerage Network Zone 1 | 21d | 2026-11-16 | 2026-12-10 | MOD-SWN-PS-1164 | 53.8d |
|  | 7 | **Engine/Motor Control Center Buildings** |  | 2025-11-06 | 2025-12-08 |  |  |

| ID | WBS | Task | Duration | Start | Finish | Predecessors | Total float |
| --- | --- | --- | --- | --- | --- | --- | --- |
| MOD-SWN-PS-038 |  | MCC Building – PS1 for Sewerage Network Zone 1 | 1d | 2025-11-06 | 2025-11-06 | MOD-SWN-PS-045 | 312.8d |
| MOD-SWN-PS-039 |  | MCC Building – PS2 for Sewerage Network Zone 1 | 7d | 2025-12-01 | 2025-12-08 | MOD-SWN-PS-038, MOD-SWN-PS-046 | 316.8d |
|  | 4 | **Valves and Fittings (General Supply & Installation)** |  | 2025-12-18 | 2025-12-23 |  |  |
| MOD-SWN-PS-012 |  | Valves, fittings & accessories – PS1 for Sewerage Network Zone 1 | 2d | 2025-12-18 | 2025-12-20 | MOD-SWN-PS-050, A102620 | 334.8d |
| MOD-SWN-PS-013 |  | 35mm raked bar SS 316 mesh – PS1 for Sewerage Network Zone 1 | 1d | 2025-12-21 | 2025-12-21 | MOD-SWN-PS-012 | 334.8d |
| MOD-SWN-PS-014 |  | Valves, fittings, flow meters – PS2 for Sewerage Network Zone 1 | 2d | 2025-12-22 | 2025-12-23 | MOD-SWN-PS-013, A1570, A102620 | 334.8d |
|  | 5 | **Tank with Canopy** |  | 2026-10-22 | 2026-11-07 |  |  |
| MOD-SWN-PS-019 |  | Tank with canopy (per specs/drawings) - PS1 for Sewerage Network Zone 1 | 13d | 2026-10-22 | 2026-11-07 | MOD-SWN-PS-010 | 82.8d |
|  | 6 | **Pump Well and Valve Chambers** |  | 2025-11-19 | 2026-01-29 |  |  |
| MOD-SWN-PS-022 |  | Pump well & valve chamber structure – PS1 (2 wells, 12m deep) for Sewerage Network Zone 1 | 13d | 2025-11-19 | 2025-12-03 | MOD-SWN-PS-038, A102760, A102810 | 302.8d |
| MOD-SWN-PS-023 |  | Concrete wall (5x5x1m) inside PS1 well for Sewerage Network Zone 1 | 7d | 2025-12-04 | 2025-12-11 | MOD-SWN-PS-022, A103770 | 302.8d |
| MOD-SWN-PS-027 |  | Pump well & valve chamber structure – PS2 (2 wells, 3m each, 9m depth) for Sewerage Network Zone 1 | 14d | 2025-12-04 | 2025-12-20 | MOD-SWN-PS-022, A102760, A102810 | 306.8d |
| MOD-SWN-PS-024 |  | 35 mm raked bar SS 316 network chamber PS1 for Sewerage Network Zone 1 | 1d | 2025-12-13 | 2025-12-13 | MOD-SWN-PS-023 | 302.8d |
| MOD-SWN-PS-025 |  | Valve chamber – PS1 for Sewerage Network Zone 1 | 6d | 2025-12-14 | 2025-12-20 | MOD-SWN-PS-024, A102760 | 302.8d |
| MOD-SWN-PS-026 |  | Flow meter chamber – PS1 for Sewerage Network Zone 1 | 4d | 2025-12-21 | 2025-12-24 | MOD-SWN-PS-025, A102760 | 302.8d |
| MOD-SWN-PS-028 |  | Valve chamber – PS2 for Sewerage Network Zone 1 | 16d | 2025-12-25 | 2026-01-12 | MOD-SWN-PS-027, MOD-SWN-PS-039, A102760, MOD-SWN-PS-026 | 302.8d |
| MOD-SWN-PS-029 |  | Flow meter chamber – PS2 for Sewerage Network Zone 1 | 15d | 2026-01-13 | 2026-01-29 | MOD-SWN-PS-028, A102760 | 302.8d |
|  | 8 | **Odor Control System Base/Plinth** |  | 2025-12-25 | 2025-12-31 |  |  |
| MOD-SWN-PS-043 |  | Concrete plinth below odor control – All PSs for Sewerage Network Zone 1 | 6d | 2025-12-25 | 2025-12-31 | MOD-SWN-PS-061, A103770 | 241.8d |
|  | 10 | **Lighting Works** |  | 2025-12-13 | 2025-12-27 |  |  |
| MOD-SWN-PS-052 |  | 250W Flood Light installation – Each PS for Sewerage Network Zone 1 | 13d | 2025-12-13 | 2025-12-27 | MOD-SWN-PS-056 | 331.8d |
|  | 11 | **Duct Works** |  | 2025-12-04 | 2025-12-11 |  |  |
| MOD-SWN-PS-054 |  | uPVC duct Track 1 – All PSs for Sewerage Network Zone 1 | 1d | 2025-12-04 | 2025-12-04 | MOD-SWN-PS-022, A1650 | 331.8d |
| MOD-SWN-PS-055 |  | uPVC duct Track 2 – All PSs for Sewerage Network Zone 1 | 2d | 2025-12-06 | 2025-12-07 | MOD-SWN-PS-054, A1650 | 331.8d |
| MOD-SWN-PS-056 |  | uPVC duct Track 8 – All PSs for Sewerage Network Zone 1 | 4d | 2025-12-08 | 2025-12-11 | MOD-SWN-PS-055, A1650 | 331.8d |
|  | 12 | **Grounding Works** |  | 2025-12-13 | 2025-12-15 |  |  |
| MOD-SWN-PS-058 |  | Grounding pit – Each PS for Sewerage Network Zone 1 | 1d | 2025-12-13 | 2025-12-13 | MOD-SWN-PS-056 | 341.8d |
| MOD-SWN-PS-059 |  | 600x600 Cable pull pit – All PSs for Sewerage Network Zone 1 | 2d | 2025-12-14 | 2025-12-15 | MOD-SWN-PS-058 | 341.8d |
|  | 13 | **Landscaping / Interlocking Tiles** |  | 2025-12-06 | 2025-12-29 |  |  |
| MOD-SWN-PS-061 |  | Building perimeter interlock tiles for Sewerage Network Zone 1 | 17d | 2025-12-06 | 2025-12-24 | MOD-SWN-PS-050, MOD-SWN-PS-045 | 241.8d |
| MOD-SWN-PS-062 |  | Entrance road paving tiles for Sewerage Network Zone 1 | 4d | 2025-12-25 | 2025-12-29 | MOD-SWN-PS-061 | 329.8d |
|  | 14 | **Pumping Station Internal Drainage Network** |  | 2025-12-01 | 2025-12-08 |  |  |
| MOD-SWN-PS-064 |  | Internal surface drainage channels for Sewerage Network Zone 1 | 7d | 2025-12-01 | 2025-12-08 | MOD-SWN-PS-045, MOD-SWN-PS-046 | 347.8d |
|  | 12 | **Rainwater Drainage Network Zone 1** |  | 2025-10-19 | 2026-01-18 |  |  |
|  | 1 | **Pipe Laying Works** |  | 2025-10-19 | 2026-01-18 |  |  |
|  | 2 | **Supply & Installation of uPVC Pipes (250–300mm dia)** |  | 2025-10-19 | 2025-12-13 |  |  |
| MOD-RWN-PL-913 |  | Excavation to required depth UPVC for Rainwater Drainage Network Zone 1 | 21d | 2025-10-19 | 2025-11-08 | A102500, A102190, A1600 | 13d |
| MOD-RWN-PL-923 |  | Lean Concrete / Bedding UPVC for Rainwater Drainage Network Zone 1 | 5d | 2025-11-09 | 2025-11-13 | MOD-RWN-PL-913 | 13d |
| MOD-RWN-PL-933 |  | Laying of uPVC pipe UPVC for Rainwater Drainage Network Zone 1 | 19d | 2025-11-14 | 2025-12-02 | MOD-RWN-PL-923 | 13d |
| MOD-RWN-PL-953 |  | Test (Pressure-slope) UPVC for Rainwater Drainage Network Zone 1 | 3d | 2025-12-03 | 2025-12-05 | MOD-RWN-PL-933 | 13d |
| MOD-RWN-PL-943 |  | Coating / Wrapping UPVC for Rainwater Drainage Network Zone 1 | 2d | 2025-12-06 | 2025-12-07 | MOD-RWN-PL-953 | 42d |
| MOD-RWN-PL-963 |  | Backfilling & Warning Tape UPVC for Rainwater Drainage Network Zone 1 | 8d | 2025-12-06 | 2025-12-13 | MOD-RWN-PL-953, MOD-GEI-PL-001 | 36d |
|  | 3 | **Supply & Installation of GRP Pipes (350–800mm dia)** |  | 2025-10-19 | 2026-01-18 |  |  |
| MOD-RWN-PL-973 |  | Excavate short trench paths GRP for Rainwater Drainage Network Zone 1 | 21d | 2025-10-19 | 2025-11-08 | A102500, A102190 | 0d |
| MOD-RWN-PL-983 |  | Lean Concrete / bedding material GRP for Rainwater Drainage Network Zone 1 | 8d | 2025-11-09 | 2025-11-16 | MOD-RWN-PL-973 | 0d |
| MOD-RWN-PL-993 |  | Lay & connect GRP for Rainwater Drainage Network Zone 1 | 21d | 2025-11-17 | 2025-12-07 | MOD-RWN-PL-983 | 0d |
| MOD-RWN-PL-1003 |  | Test (Pressure-slope) GRP for Rainwater Drainage Network Zone 1 | 11d | 2025-12-08 | 2025-12-18 | MOD-RWN-PL-993 | 0d |
| MOD-RWN-PL-1073 |  | Coating / Wrapping GRP for Rainwater Drainage Network Zone 1 | 21d | 2025-12-19 | 2026-01-08 | MOD-RWN-PL-1003 | 0d |
| MOD-RWN-PL-1013 |  | Backfilling & compaction GRP for Rainwater Drainage Network Zone 1 | 10d | 2026-01-09 | 2026-01-18 | MOD-RWN-PL-1003, MOD-RWN-PL-1073, MOD-GEI-PL-001 | 0d |
|  | 4 | **uPVC Connection Pipes (150mm dia)** |  | 2025-10-19 | 2026-01-05 |  |  |
| MOD-RWN-PL-1023 |  | Excavate short trench paths UPVC Con. for Rainwater Drainage Network Zone 1 | 5d | 2025-10-19 | 2025-10-23 | A102500, A102190 | 50d |
| MOD-RWN-PL-1033 |  | Lean Concrete / bedding material UPVC Con. for Rainwater Drainage Network Zone 1 | 3d | 2025-10-24 | 2025-10-26 | MOD-RWN-PL-1023 | 50d |
| MOD-RWN-PL-1043 |  | Lay & connect UPVC Con. for Rainwater Drainage Network Zone 1 | 8d | 2025-12-03 | 2025-12-10 | MOD-RWN-PL-1033, MOD-RWN-PL-953 SS | 13d |
| MOD-RWN-PL-1053 |  | Test (Pressure-slope) UPVC Con. for Rainwater Drainage Network Zone 1 | 3d | 2025-12-11 | 2025-12-13 | MOD-RWN-PL-1043 | 13d |
| MOD-RWN-PL-1083 |  | Coating / Wrapping UPVC Con. for Rainwater Drainage Network Zone 1 | 21d | 2025-12-14 | 2026-01-03 | MOD-RWN-PL-1053 | 13d |
| MOD-RWN-PL-1063 |  | Backfilling & compaction UPVC Con. for Rainwater Drainage Network Zone 1 | 2d | 2026-01-04 | 2026-01-05 | MOD-RWN-PL-1053, MOD-RWN-PL-1083, MOD-GEI-PL-001 | 13d |
|  | 5 | **Precast Concrete Box Culverts** |  | 2025-10-19 | 2026-01-06 |  |  |
|  | 1 | **Box Culverts (500x500mm to 3500x800mm)** |  | 2025-10-19 | 2026-01-06 |  |  |
| MOD-RWN-PC-002 |  | Survey and layout alignment Box culvert for Rainwater Drainage Network Zone 1 | 3d | 2025-10-19 | 2025-10-22 | MOD-RWN-PL-973 SS | 0d |
| MOD-RWN-PC-504 |  | Setting Benchmark Box culvert for Rainwater Drainage Network Zone 1 | 2d | 2025-10-22 | 2025-10-25 | MOD-RWN-PC-002 | 0d |
| MOD-RWN-PC-514 |  | Cleaning Box culvert for Rainwater Drainage Network Zone 1 | 5d | 2025-10-25 | 2025-10-30 | MOD-RWN-PC-504 | 0d |
| MOD-RWN-PC-524 |  | Testing Box culvert for Rainwater Drainage Network Zone 1 | 2d | 2025-10-30 | 2025-11-02 | MOD-RWN-PC-514 | 0d |
| MOD-RWN-PC-003 |  | Excavation to required depth Box culvert for Rainwater Drainage Network Zone 1 | 7d | 2025-11-02 | 2025-11-10 | MOD-RWN-PC-002, MOD-RWN-PC-524, A1600 | 0d |
| MOD-RWN-PC-004 |  | Dewatering and trench shoring Box culvert for Rainwater Drainage Network Zone 1 | 8d | 2025-11-10 | 2025-11-19 | MOD-RWN-PC-003 | 0d |
| MOD-RWN-PC-005 |  | Bedding preparation (gravel/lean concrete) Box culvert for Rainwater Drainage Network Zone 1 | 4d | 2025-11-19 | 2025-11-24 | MOD-RWN-PC-004 | 0d |
| MOD-RWN-PC-006 |  | Installation of box culvert units Box culvert for Rainwater Drainage Network Zone 1 | 15d | 2025-11-25 | 2025-12-11 | MOD-RWN-PC-005 FS+0.9d | 0d |
| MOD-RWN-PC-007 |  | Alignment and joint sealing Box culvert for Rainwater Drainage Network Zone 1 | 4d | 2025-12-13 | 2025-12-16 | MOD-RWN-PC-006 | 10d |
| MOD-RWN-PC-008 |  | Construct headwalls/wing walls (if needed) Box culvert for Rainwater Drainage Network Zone 1 | 8d | 2025-12-17 | 2025-12-25 | MOD-RWN-PC-007, A102810 | 10d |
| MOD-RWN-PC-009 |  | Backfilling and compaction Box culvert for Rainwater Drainage Network Zone 1 | 7d | 2025-12-27 | 2026-01-03 | MOD-RWN-PC-008, MOD-GEI-PL-001 | 10d |
| MOD-RWN-PC-010 |  | Surface finishing Box culvert for Rainwater Drainage Network Zone 1 | 3d | 2026-01-04 | 2026-01-06 | MOD-RWN-PC-009 | 10d |

| ID | WBS | Task | Duration | Start | Finish | Predecessors | Total float |
| --- | --- | --- | --- | --- | --- | --- | --- |
|  | 2 | **Tube Culverts at Road Intersections** |  | 2025-11-10 | 2026-01-04 |  |  |
| MOD-RWN-PC-012 |  | Traffic control setup Tube culvert for Rainwater Drainage Network Zone 1 | 2d | 2025-11-10 | 2025-11-12 | MOD-RWN-PC-003, MOD-RWN-PC-003 FF | 12.9d |
| MOD-RWN-PC-013 |  | Trench excavation under road Tube culvert for Rainwater Drainage Network Zone 1 | 10d | 2025-11-12 | 2025-11-24 | MOD-RWN-PC-012, A102790 | 12.9d |
| MOD-RWN-PC-014 |  | Pipe bedding and twin pipe alignment Tube culvert for Rainwater Drainage Network Zone 1 | 6d | 2025-11-24 | 2025-12-01 | MOD-RWN-PC-013 | 12.9d |
| MOD-RWN-PC-015 |  | Pipe laying and jointing Tube culvert for Rainwater Drainage Network Zone 1 | 21d | 2025-12-01 | 2025-12-25 | MOD-RWN-PC-014, A102740, A1650 | 12.9d |
| MOD-RWN-PC-016 |  | Backfilling and road reinstatement Tube culvert for Rainwater Drainage Network Zone 1 | 8d | 2025-12-25 | 2026-01-04 | MOD-RWN-PC-015, MOD-GEI-PL-001 | 12.9d |
|  | 3 | **Box Culverts at Road Intersections** |  | 2025-11-12 | 2026-01-01 |  |  |
| MOD-RWN-PC-018 |  | Traffic diversion and barricading for Rainwater Drainage Network Zone 1 | 15d | 2025-11-12 | 2025-11-30 | MOD-RWN-PC-012 | 14.9d |
| MOD-RWN-PC-019 |  | Deep trench excavation with shoring for Rainwater Drainage Network Zone 1 | 1d | 2025-11-30 | 2025-12-01 | MOD-RWN-PC-018 | 14.9d |
| MOD-RWN-PC-020 |  | Place bedding material for Rainwater Drainage Network Zone 1 | 1d | 2025-12-01 | 2025-12-02 | MOD-RWN-PC-019 | 14.9d |
| MOD-RWN-PC-021 |  | Install precast box culvert for Rainwater Drainage Network Zone 1 | 4d | 2025-12-02 | 2025-12-07 | MOD-RWN-PC-020 | 14.9d |
| MOD-RWN-PC-022 |  | Construct connection chambers (if needed) for Rainwater Drainage Network Zone 1 | 1d | 2025-12-07 | 2025-12-08 | MOD-RWN-PC-021, A102810 | 14.9d |
| MOD-RWN-PC-023 |  | Joint treatment and testing for Rainwater Drainage Network Zone 1 | 12d | 2025-12-08 | 2025-12-22 | MOD-RWN-PC-022 | 14.9d |
| MOD-RWN-PC-024 |  | Backfilling and surface reinstatement for Rainwater Drainage Network Zone 1 | 9d | 2025-12-22 | 2026-01-01 | MOD-RWN-PC-023, MOD-GEI-PL-001 | 14.9d |
|  | 4 | **Manholes** |  | 2025-11-25 | 2026-01-18 |  |  |
|  | 1 | **Circular GRP Manholes (1200–1800mm dia)** |  | 2025-11-25 | 2026-01-18 |  |  |
| MOD-RWN-MH-002 |  | Excavate to full manhole depth Circular Manhole for Rainwater Drainage Network Zone 1 | 5d | 2025-11-25 | 2025-11-30 | MOD-RWN-PC-006 SS | 0d |
| MOD-RWN-MH-003 |  | Dewatering and safety barriers Circular Manhole for Rainwater Drainage Network Zone 1 | 10d | 2025-12-01 | 2025-12-11 | MOD-RWN-MH-002 | 0d |
| MOD-RWN-MH-004 |  | Concrete base construction Circular Manhole for Rainwater Drainage Network Zone 1 | 5d | 2025-12-13 | 2025-12-17 | MOD-RWN-MH-003, A103770 | 0d |
| MOD-RWN-MH-005 |  | Install GRP manhole shaft sections Circular Manhole for Rainwater Drainage Network Zone 1 | 13d | 2025-12-18 | 2026-01-01 | MOD-RWN-MH-004, A1480, A102600 | 0d |
| MOD-RWN-MH-006 |  | Place slab and cover frame Circular Manhole for Rainwater Drainage Network Zone 1 | 6d | 2026-01-03 | 2026-01-08 | MOD-RWN-MH-005 | 0d |
| MOD-RWN-MH-007 |  | Waterproofing Circular Manhole for Rainwater Drainage Network Zone 1 | 5d | 2026-01-10 | 2026-01-14 | MOD-RWN-MH-006 | 0d |
| MOD-RWN-MH-008 |  | Backfilling and compaction Circular Manhole for Rainwater Drainage Network Zone 1 | 3d | 2026-01-15 | 2026-01-18 | MOD-RWN-MH-007, MOD-GEI-PL-001 | 0d |
|  | 3 | **Concrete Manholes for 1500x1500 Box Pipes** |  | 2025-11-25 | 2026-01-17 |  |  |
| MOD-RWN-MH-018 |  | Excavation Concrete Manhole 1.5x1.5 for Rainwater Drainage Network Zone 1 | 5d | 2025-11-25 | 2025-11-30 | MOD-RWN-PC-006 SS, A1600 | 7d |
| MOD-RWN-MH-019 |  | Base slab and wall shuttering Concrete Manhole 1.5x1.5 for Rainwater Drainage Network Zone 1 | 7d | 2025-12-01 | 2025-12-08 | MOD-RWN-MH-018 | 7d |
| MOD-RWN-MH-020 |  | Wall reinforcement and casting Concrete Manhole 1.5x1.5 for Rainwater Drainage Network Zone 1 | 8d | 2025-12-09 | 2025-12-17 | MOD-RWN-MH-019 | 7d |
| MOD-RWN-MH-021 |  | Roof slab with openings Concrete Manhole 1.5x1.5 for Rainwater Drainage Network Zone 1 | 5d | 2025-12-18 | 2025-12-23 | MOD-RWN-MH-020 | 7d |
| MOD-RWN-MH-022 |  | Masonry/benching works inside Concrete Manhole 1.5x1.5 for Rainwater Drainage Network Zone 1 | 4d | 2025-12-24 | 2025-12-28 | MOD-RWN-MH-021 | 7d |
| MOD-RWN-MH-023 |  | Install cover and frame Concrete Manhole 1.5x1.5 for Rainwater Drainage Network Zone 1 | 6d | 2026-01-05 | 2026-01-11 | MOD-RWN-MH-022, A1240, A102580 | 1d |
| MOD-RWN-MH-024 |  | Backfill in layers Concrete Manhole 1.5x1.5 for Rainwater Drainage Network Zone 1 | 5d | 2026-01-12 | 2026-01-17 | MOD-RWN-MH-023, MOD-GEI-PL-001 | 1d |
|  | 2 | **Concrete Manholes for 1000x1000 Box Pipes** |  | 2025-11-25 | 2026-01-12 |  |  |
| MOD-RWN-MH-010 |  | Excavation Concrete Manhole 1x1 for Rainwater Drainage Network Zone 1 | 6d | 2025-11-25 | 2025-12-01 | MOD-RWN-PC-006 SS, A1600 | 5d |
| MOD-RWN-MH-011 |  | Base slab and wall shuttering Concrete Manhole 1x1 for Rainwater Drainage Network Zone 1 | 4d | 2025-12-02 | 2025-12-06 | MOD-RWN-MH-010 | 5d |
| MOD-RWN-MH-012 |  | Wall reinforcement and casting Concrete Manhole 1x1 for Rainwater Drainage Network Zone 1 | 7d | 2025-12-07 | 2025-12-14 | MOD-RWN-MH-011 | 5d |
| MOD-RWN-MH-013 |  | Roof slab with openings Concrete Manhole 1x1 for Rainwater Drainage Network Zone 1 | 8d | 2025-12-15 | 2025-12-23 | MOD-RWN-MH-012 | 5d |
| MOD-RWN-MH-014 |  | Masonry/benching works inside Concrete Manhole 1x1 for Rainwater Drainage Network Zone 1 | 10d | 2025-12-24 | 2026-01-04 | MOD-RWN-MH-013 | 5d |
| MOD-RWN-MH-015 |  | Install cover and frame Concrete Manhole 1x1 for Rainwater Drainage Network Zone 1 | 4d | 2026-01-05 | 2026-01-08 | MOD-RWN-MH-014, A1240, A102580 | 5d |
| MOD-RWN-MH-016 |  | Backfill in layers Concrete Manhole 1x1 for Rainwater Drainage Network Zone 1 | 3d | 2026-01-10 | 2026-01-12 | MOD-RWN-MH-015, MOD-GEI-PL-001 | 5d |
|  | 2 | **Chambers and Catch Basins** |  | 2025-11-25 | 2026-01-18 |  |  |
|  | 1 | **Gully Outfalls** |  | 2025-11-25 | 2026-01-12 |  |  |
| MOD-RWN-CC-002 |  | Identify discharge zones Gully Outfall for Rainwater Drainage Network Zone 1 | 4d | 2025-11-25 | 2025-11-29 | MOD-RWN-PC-006 SS | 5d |
| MOD-RWN-CC-003 |  | Excavate outfall channel Gully Outfall for Rainwater Drainage Network Zone 1 | 9d | 2025-11-30 | 2025-12-09 | MOD-RWN-CC-002 | 5d |
| MOD-RWN-CC-004 |  | Place concrete apron or pipes Gully Outfall for Rainwater Drainage Network Zone 1 | 15d | 2025-12-10 | 2025-12-27 | MOD-RWN-CC-003 | 5d |
| MOD-RWN-CC-005 |  | Provide slope protection (riprap) Gully Outfall for Rainwater Drainage Network Zone 1 | 8d | 2025-12-28 | 2026-01-05 | MOD-RWN-CC-004 | 5d |
| MOD-RWN-CC-006 |  | Compact and shape terrain Gully Outfall for Rainwater Drainage Network Zone 1 | 6d | 2026-01-06 | 2026-01-12 | MOD-RWN-CC-005 | 5d |
|  | 2 | **Rainwater Catch Basins** |  | 2025-12-13 | 2026-01-14 |  |  |
| MOD-RWN-CC-008 |  | Excavate pit area Catch Basin for Rainwater Drainage Network Zone 1 | 6d | 2025-12-13 | 2025-12-18 | MOD-RWN-PC-006 | 0d |
| MOD-RWN-CC-009 |  | Lay bedding and place chamber Catch Basin for Rainwater Drainage Network Zone 1 | 12d | 2025-12-20 | 2026-01-01 | MOD-RWN-CC-008 | 0d |
| MOD-RWN-CC-010 |  | Connect lateral inlet pipe Catch Basin for Rainwater Drainage Network Zone 1 | 4d | 2026-01-03 | 2026-01-06 | MOD-RWN-CC-009 | 0d |
| MOD-RWN-CC-011 |  | Cover with grating Catch Basin for Rainwater Drainage Network Zone 1 | 5d | 2026-01-07 | 2026-01-12 | MOD-RWN-CC-010 | 3d |
| MOD-RWN-CC-012 |  | Backfill and surface finish Catch Basin for Rainwater Drainage Network Zone 1 | 2d | 2026-01-13 | 2026-01-14 | MOD-RWN-CC-011, MOD-GEI-PL-001 | 3d |
|  | 3 | **Precast Chambers for Absorption Pits** |  | 2025-12-13 | 2026-01-18 |  |  |
| MOD-RWN-CC-014 |  | Excavate pit area Absorption Pit for Rainwater Drainage Network Zone 1 | 7d | 2025-12-13 | 2025-12-20 | MOD-RWN-PC-006 | 0d |
| MOD-RWN-CC-015 |  | Install base slab and precast chamber Absorption Pit for Rainwater Drainage Network Zone 1 | 10d | 2025-12-21 | 2025-12-31 | MOD-RWN-CC-014 | 0d |
| MOD-RWN-CC-016 |  | Connect outlet/inlet piping Absorption Pit for Rainwater Drainage Network Zone 1 | 5d | 2026-01-01 | 2026-01-06 | MOD-RWN-CC-015 | 0d |
| MOD-RWN-CC-017 |  | Waterproofing and protection Absorption Pit for Rainwater Drainage Network Zone 1 | 6d | 2026-01-07 | 2026-01-13 | MOD-RWN-CC-016 | 0d |
| MOD-RWN-CC-018 |  | Backfill and compact Absorption Pit for Rainwater Drainage Network Zone 1 | 4d | 2026-01-14 | 2026-01-18 | MOD-RWN-CC-017, MOD-GEI-PL-001 | 0d |
|  | 3 | **Gully Outfalls to Swales** |  | 2025-12-20 | 2026-01-18 |  |  |
|  | 1 | **Gully Outfalls to Swales** |  | 2025-12-20 | 2026-01-07 |  |  |
| MOD-RWN-GO-002 |  | Identify swale discharge zones Gully Outfall to Swales for Rainwater Drainage Network Zone 1 | 2d | 2025-12-20 | 2025-12-21 | MOD-RWN-CC-009 SS | 9d |
| MOD-RWN-GO-003 |  | Excavate outfall channel Gully Outfall to Swales for Rainwater Drainage Network Zone 1 | 4d | 2025-12-22 | 2025-12-25 | MOD-RWN-GO-002 | 9d |
| MOD-RWN-GO-004 |  | Place concrete apron or pipes Gully Outfall to Swales for Rainwater Drainage Network Zone 1 | 5d | 2025-12-27 | 2025-12-31 | MOD-RWN-GO-003 | 9d |
| MOD-RWN-GO-005 |  | Provide slope protection (riprap) Gully Outfall to Swales for Rainwater Drainage Network Zone 1 | 4d | 2026-01-01 | 2026-01-05 | MOD-RWN-GO-004 | 9d |
| MOD-RWN-GO-006 |  | Compact and shape terrain Gully Outfall to Swales for Rainwater Drainage Network Zone 1 | 2d | 2026-01-06 | 2026-01-07 | MOD-RWN-GO-005 | 9d |
|  | 2 | **Riprap Works & Protection** |  | 2026-01-03 | 2026-01-18 |  |  |
| MOD-RWN-GO-008 |  | Lay filter fabric/membrane for Rainwater Drainage Network Zone 1 | 2d | 2026-01-03 | 2026-01-04 | MOD-RWN-CC-010 SS | 0d |
| MOD-RWN-GO-009 |  | Place riprap/stone layer for Rainwater Drainage Network Zone 1 | 7d | 2026-01-05 | 2026-01-12 | MOD-RWN-GO-008 | 0d |
| MOD-RWN-GO-010 |  | Compact edges for Rainwater Drainage Network Zone 1 | 3d | 2026-01-13 | 2026-01-15 | MOD-RWN-GO-009 | 0d |
| MOD-RWN-GO-011 |  | Ensure hydraulic flow direction for Rainwater Drainage Network Zone 1 | 2d | 2026-01-17 | 2026-01-18 | MOD-RWN-GO-010 | 0d |

| ID | WBS | Task | Duration | Start | Finish | Predecessors | Total float |
| --- | --- | --- | --- | --- | --- | --- | --- |
|  | 6 | **Backfilling & Bedding** |  | 2025-11-02 | 2026-01-18 |  |  |
|  | 1 | **Backfilling Materials (Type A – 201–700mm Pipes)** |  | 2025-11-10 | 2026-01-18 |  |  |
| MOD-RWN-BB-002 |  | Place granular bedding under pipe for Rainwater Drainage Network Zone 1 | 9d | 2025-11-10 | 2025-11-20 | MOD-RWN-PC-003 | 0d |
| MOD-RWN-BB-003 |  | Lay and align pipe for Rainwater Drainage Network Zone 1 | 21d | 2025-11-20 | 2025-12-15 | MOD-RWN-BB-002 | 0d |
| MOD-RWN-BB-004 |  | Backfill up to spring line for Rainwater Drainage Network Zone 1 | 13d | 2025-12-15 | 2025-12-30 | MOD-RWN-BB-003, MOD-GEI-PL-001 | 0d |
| MOD-RWN-BB-005 |  | Compact layer-wise for Rainwater Drainage Network Zone 1 | 9d | 2025-12-30 | 2026-01-10 | MOD-RWN-BB-004 | 0d |
| MOD-RWN-BB-006 |  | Final fill to subgrade level for Rainwater Drainage Network Zone 1 | 6d | 2026-01-12 | 2026-01-18 | MOD-RWN-BB-005 FS+1.9d | 0d |
|  | 2 | **Gravel Bedding & Filter Cloth for uPVC Drain Pipes** |  | 2025-11-02 | 2026-01-18 |  |  |
| MOD-RWN-BB-008 |  | Line trench with filter cloth for Rainwater Drainage Network Zone 1 | 10d | 2025-11-02 | 2025-11-13 | MOD-RWN-PC-003 SS | 0d |
| MOD-RWN-BB-009 |  | Place and compact gravel bedding for Rainwater Drainage Network Zone 1 | 12d | 2025-11-13 | 2025-11-27 | MOD-RWN-BB-008 | 0d |
| MOD-RWN-BB-010 |  | Lay pipe within gravel zone for Rainwater Drainage Network Zone 1 | 20d | 2025-11-27 | 2025-12-21 | MOD-RWN-BB-009 | 0d |
| MOD-RWN-BB-011 |  | Wrap filter cloth above pipe for Rainwater Drainage Network Zone 1 | 12d | 2025-12-21 | 2026-01-04 | MOD-RWN-BB-010 | 0d |
| MOD-RWN-BB-012 |  | Final fill and trench restoration for Rainwater Drainage Network Zone 1 | 12d | 2026-01-05 | 2026-01-18 | MOD-RWN-BB-011 FS+0.9d | 0d |
|  | 13 | **Potable Water Network Zone 1** |  | 2025-10-19 | 2026-01-17 |  |  |
|  | 1 | **Pipe Installation Works** |  | 2025-10-19 | 2025-12-14 |  |  |
| MOD-PWN-PI-373 |  | Trench Excavation for Potable Water Network Zone 1 | 21d | 2025-10-19 | 2025-11-08 | A102500, A102190 | 11d |
| MOD-PWN-PI-383 |  | Lean Concrete / Pipe Bedding Preparation for Potable Water Network Zone 1 | 4d | 2025-11-09 | 2025-11-12 | MOD-PWN-PI-373 | 35d |
| MOD-PWN-PI-393 |  | HDPE Pipe Laying (200 mm to 710 mm) for Potable Water Network Zone 1 | 21d | 2025-11-13 | 2025-12-03 | MOD-PWN-PI-383, A1650 | 35d |
| MOD-PWN-PI-403 |  | Test (Pressure-slope) for Potable Water Network Zone 1 | 3d | 2025-12-04 | 2025-12-06 | MOD-PWN-PI-393 | 35d |
| MOD-PWN-PI-413 |  | Coating / Wrapping for Potable Water Network Zone 1 | 5d | 2025-12-07 | 2025-12-11 | MOD-PWN-PI-403 | 35d |
| MOD-PWN-PI-423 |  | Backfilling & Warrning Tape for Potable Water Network Zone 1 | 3d | 2025-12-12 | 2025-12-14 | MOD-PWN-PI-413, MOD-PWN-PI-413 FF, MOD-GEI-PL-001 | 35d |
|  | 2 | **Valve Installation & Chambers** |  | 2025-11-09 | 2025-12-27 |  |  |
| MOD-PWN-VC-004 |  | Valve Chamber Excavation for Potable Water Network Zone 1 | 8d | 2025-11-09 | 2025-11-17 | MOD-PWN-PI-373 | 10d |
| MOD-PWN-VC-005 |  | RC Slab, Walls, or Precast Chambers for Potable Water Network Zone 1 | 7d | 2025-11-19 | 2025-11-26 | MOD-PWN-VC-004, A102760 | 39d |
| MOD-PWN-VC-001 |  | Gate Valves (225–710 mm) for Potable Water Network Zone 1 | 12d | 2025-12-07 | 2025-12-20 | A102750 | 19d |
| MOD-PWN-VC-002 |  | Butterfly Valves (355, 500, 630 mm) for Potable Water Network Zone 1 | 12d | 2025-12-07 | 2025-12-20 | MOD-PWN-VC-001 SS, A102750 | 19d |
| MOD-PWN-VC-003 |  | 3-exit (2 x 2.5-inch and 1 x 4-inch) dry vacuum cylinder detachable fire nozzle for Potable Water Network Zone 1 | 12d | 2025-12-07 | 2025-12-20 | MOD-PWN-VC-002 SS | 19d |
| MOD-PWN-VC-006 |  | Fixing Covers, Gratings, Frames for Potable Water Network Zone 1 | 4d | 2025-12-21 | 2025-12-24 | MOD-PWN-VC-005, MOD-PWN-VC-003 | 19d |
| MOD-PWN-VC-007 |  | Tagging & Painting for Potable Water Network Zone 1 | 2d | 2025-12-25 | 2025-12-27 | MOD-PWN-VC-006 | 19d |
|  | 3 | **Flow Meter Installation** |  | 2025-11-09 | 2026-01-17 |  |  |
| MOD-PWN-FM-001 |  | Chamber Excavation (280 mm, 300 mm, 500 mm, 800 mm) for Potable Water Network Zone 1 | 14d | 2025-11-09 | 2025-11-24 | MOD-PWN-VC-004 SS | 13d |
| MOD-PWN-FM-002 |  | RC or Precast Chamber Construction for Potable Water Network Zone 1 | 8d | 2025-11-25 | 2025-12-03 | MOD-PWN-FM-001, A102760 | 13d |
| MOD-PWN-FM-003 |  | Flowmeter Installation & Pipe Integration for Potable Water Network Zone 1 | 15d | 2025-12-18 | 2026-01-04 | MOD-PWN-FM-002, A1570, A102620 | 1d |
| MOD-PWN-FM-004 |  | Wiring/Cabling if applicable for Potable Water Network Zone 1 | 8d | 2026-01-05 | 2026-01-13 | MOD-PWN-FM-003 | 1d |
| MOD-PWN-FM-005 |  | Calibration & Commissioning for Potable Water Network Zone 1 | 3d | 2026-01-14 | 2026-01-17 | MOD-PWN-FM-004 | 1d |
|  | 4 | **Washout & Air Valve Chambers** |  | 2025-11-09 | 2026-01-06 |  |  |
| MOD-PWN-WA-001 |  | Chamber Excavation (280 mm to 710 mm) for Potable Water Network Zone 1 | 8d | 2025-11-09 | 2025-11-17 | MOD-PWN-VC-004 SS | 10d |
| MOD-PWN-WA-002 |  | RC Blinding + Base + Walls for Potable Water Network Zone 1 | 9d | 2025-11-18 | 2025-11-27 | MOD-PWN-WA-001 | 10d |
| MOD-PWN-WA-003 |  | Pipe Work for Potable Water Network Zone 1 | 12d | 2025-11-29 | 2025-12-11 | MOD-PWN-WA-002, A102740, A1650 | 10d |
| MOD-PWN-WA-004 |  | Washout (Valve + Outlet) Installation for Potable Water Network Zone 1 | 8d | 2025-12-13 | 2025-12-21 | MOD-PWN-WA-003, A102750 | 10d |
| MOD-PWN-WA-005 |  | Air Valve Rooms (Valve + Outlet) Installation for Potable Water Network Zone 1 | 7d | 2025-12-22 | 2025-12-29 | MOD-PWN-WA-004, A102750, A102780 | 10d |
| MOD-PWN-WA-006 |  | Covers, Ladders & Tags for Potable Water Network Zone 1 | 4d | 2025-12-30 | 2026-01-03 | MOD-PWN-WA-005 | 10d |
| MOD-PWN-WA-007 |  | Backfilling & Final Finishing for Potable Water Network Zone 1 | 3d | 2026-01-04 | 2026-01-06 | MOD-PWN-WA-006, MOD-GEI-PL-001 | 10d |
|  | 7 | **Irrigation Network Zone 1** |  | 2025-10-19 | 2026-01-18 |  |  |
|  | 1 | **Excavation, Pipe Laying & Backfilling** |  | 2025-10-19 | 2025-12-14 |  |  |
| MOD-IRN-EB-390 |  | Trench Excavation for Irrigation Network Zone 1 | 21d | 2025-10-19 | 2025-11-08 | A102500, A102190 | 35d |
| MOD-IRN-EB-400 |  | Lean Concrete / Pipe Bedding with Type B Material for Irrigation Network Zone 1 | 9d | 2025-11-09 | 2025-11-17 | MOD-IRN-EB-390 | 35d |
| MOD-IRN-EB-410 |  | HDPE Pipe Laying (125 mm to 630 mm) for Irrigation Network Zone 1 | 21d | 2025-11-18 | 2025-12-08 | MOD-IRN-EB-400, A1650 | 35d |
| MOD-IRN-EB-420 |  | Test (Pressure-slope) for Irrigation Network Zone 1 | 2d | 2025-12-09 | 2025-12-10 | MOD-IRN-EB-410 | 35d |
| MOD-IRN-EB-430 |  | Coating / Wrapping for Irrigation Network Zone 1 | 2d | 2025-12-11 | 2025-12-12 | MOD-IRN-EB-420 | 35d |
| MOD-IRN-EB-440 |  | Backfilling & Warrning Tape for Irrigation Network Zone 1 | 2d | 2025-12-13 | 2025-12-14 | MOD-IRN-EB-430, MOD-IRN-EB-430 FF, MOD-GEI-PL-001 | 35d |
|  | 2 | **Valves and Appurtenances** |  | 2025-12-07 | 2025-12-29 |  |  |
| MOD-IRN-VA-001 |  | Supply & Installation of Valves (Gate Valve) for Irrigation Network Zone 1 | 8d | 2025-12-07 | 2025-12-15 | A102750 | 0d |
| MOD-IRN-VA-002 |  | Supply & Installation of Valves (Butterfly Valve) for Irrigation Network Zone 1 | 9d | 2025-12-11 | 2025-12-21 | MOD-IRN-VA-001 SS+4d, A102750 | 0d |
| MOD-IRN-VA-003 |  | Installation of Flanges, Bolts, Collars, Nuts for Irrigation Network Zone 1 | 3d | 2025-12-22 | 2025-12-24 | MOD-IRN-VA-002 | 0d |
| MOD-IRN-VA-004 |  | Valve Pressure Testing for Irrigation Network Zone 1 | 2d | 2025-12-25 | 2025-12-27 | MOD-IRN-VA-003 | 17d |
| MOD-IRN-VA-005 |  | Support Brackets/Anchor Blocks for Irrigation Network Zone 1 | 2d | 2025-12-28 | 2025-12-29 | MOD-IRN-VA-004 | 17d |
|  | 3 | **Valve Rooms** |  | 2025-12-25 | 2026-01-18 |  |  |
| MOD-IRN-VR-001 |  | Excavation for Valve Room Valve Chamber for Irrigation Network Zone 1 | 3d | 2025-12-25 | 2025-12-28 | MOD-IRN-VA-003, A1600 | 0d |
| MOD-IRN-VR-002 |  | Blinding Concrete Valve Chamber for Irrigation Network Zone 1 | 2d | 2025-12-29 | 2025-12-30 | MOD-IRN-VR-001, A103770 | 0d |
| MOD-IRN-VR-003 |  | RCC Base Slab & Chamber Walls Valve Chamber for Irrigation Network Zone 1 | 4d | 2025-12-31 | 2026-01-04 | MOD-IRN-VR-002, A102760 | 0d |
| MOD-IRN-VR-004 |  | Block Wall Construction (if any) Valve Chamber for Irrigation Network Zone 1 | 4d | 2026-01-05 | 2026-01-08 | MOD-IRN-VR-003 | 0d |
| MOD-IRN-VR-005 |  | Installation of Valve inside the Room Valve Chamber for Irrigation Network Zone 1 | 5d | 2026-01-10 | 2026-01-14 | MOD-IRN-VR-004 | 0d |
| MOD-IRN-VR-006 |  | Fixing Frame & Cover Valve Chamber for Irrigation Network Zone 1 | 2d | 2026-01-15 | 2026-01-17 | MOD-IRN-VR-005 | 0d |
| MOD-IRN-VR-007 |  | Backfilling and Finishing Valve Chamber for Irrigation Network Zone 1 | 1d | 2026-01-18 | 2026-01-18 | MOD-IRN-VR-006, MOD-GEI-PL-001 | 0d |
|  | 4 | **Washout Chambers** |  | 2025-12-22 | 2026-01-18 |  |  |
| MOD-IRN-WC-001 |  | Excavation for Chamber Washout Chamber for Irrigation Network Zone 1 | 6d | 2025-12-22 | 2025-12-28 | MOD-IRN-VA-003 SS, A1600 | 0d |
| MOD-IRN-WC-002 |  | Blinding Concrete Washout Chamber for Irrigation Network Zone 1 | 3d | 2025-12-29 | 2025-12-31 | MOD-IRN-WC-001, A103770 | 0d |
| MOD-IRN-WC-003 |  | Construction of RCC Base & Chamber Wall Washout Chamber for Irrigation Network Zone 1 | 4d | 2026-01-01 | 2026-01-05 | MOD-IRN-WC-002 | 0d |
| MOD-IRN-WC-004 |  | Washout Valve & Pipe Connection Washout Chamber for Irrigation Network Zone 1 | 5d | 2026-01-06 | 2026-01-11 | MOD-IRN-WC-003, A102750 | 0d |

| ID | WBS | Task | Duration | Start | Finish | Predecessors | Total float |
| --- | --- | --- | --- | --- | --- | --- | --- |
| MOD-IRN-WC-005 |  | Manhole Frame, Cover & Ladder Fixing Washout Chamber for Irrigation Network Zone 1 | 5d | 2026-01-12 | 2026-01-17 | MOD-IRN-WC-004, A1480, A102600 | 0d |
| MOD-IRN-WC-006 |  | Backfilling & Reinstatement Washout Chamber for Irrigation Network Zone 1 | 1d | 2026-01-18 | 2026-01-18 | MOD-IRN-WC-005, MOD-GEI-PL-001 | 0d |
|  | 5 | **Air Valve Chambers** |  | 2025-12-22 | 2026-01-13 |  |  |
| MOD-IRN-AC-001 |  | Chamber Excavation Air Valve Chamber for Irrigation Network Zone 1 | 6d | 2025-12-22 | 2025-12-28 | MOD-IRN-VA-003 SS | 4d |
| MOD-IRN-AC-002 |  | Blinding & RCC Base Air Valve Chamber for Irrigation Network Zone 1 | 4d | 2025-12-29 | 2026-01-01 | MOD-IRN-AC-001, A103770 | 4d |
| MOD-IRN-AC-003 |  | Wall Casting / Blockwork Air Valve Chamber for Irrigation Network Zone 1 | 4d | 2026-01-03 | 2026-01-06 | MOD-IRN-AC-002 | 4d |
| MOD-IRN-AC-004 |  | Air Valve Installation (280–630 mm) Air Valve Chamber for Irrigation Network Zone 1 | 4d | 2026-01-07 | 2026-01-11 | MOD-IRN-AC-003, A102780 | 4d |
| MOD-IRN-AC-005 |  | Cover Fixing & Finishing Air Valve Chamber for Irrigation Network Zone 1 | 2d | 2026-01-12 | 2026-01-13 | MOD-IRN-AC-004 | 4d |
|  | 6 | **Flow Meter Chambers** |  | 2025-12-22 | 2026-01-18 |  |  |
| MOD-IRN-FC-001 |  | Chamber Excavation Flow Meter Chamber for Irrigation Network Zone 1 | 8d | 2025-12-22 | 2025-12-30 | MOD-IRN-VA-003 SS | 0d |
| MOD-IRN-FC-002 |  | RCC Base & Wall Construction Flow Meter Chamber for Irrigation Network Zone 1 | 5d | 2025-12-31 | 2026-01-05 | MOD-IRN-FC-001, A102760 | 0d |
| MOD-IRN-FC-003 |  | Flow Meter Installation (280, 300, 500 mm) Flow Meter Chamber for Irrigation Network Zone 1 | 6d | 2026-01-06 | 2026-01-12 | MOD-IRN-FC-002, A1570, A102620 | 0d |
| MOD-IRN-FC-004 |  | Integration with Pipework Flow Meter Chamber for Irrigation Network Zone 1 | 2d | 2026-01-13 | 2026-01-14 | MOD-IRN-FC-003 | 0d |
| MOD-IRN-FC-005 |  | Testing & Calibration Flow Meter Chamber for Irrigation Network Zone 1 | 2d | 2026-01-15 | 2026-01-17 | MOD-IRN-FC-004 | 0d |
| MOD-IRN-FC-006 |  | Cover and Access Arrangement Flow Meter Chamber for Irrigation Network Zone 1 | 1d | 2026-01-18 | 2026-01-18 | MOD-IRN-FC-005 | 0d |
|  | 4 | **Rainwater Collection Ponds Zone 1** |  | 2026-01-19 | 2027-02-08 |  |  |
|  | 10 | **Excavation for Rainwater Drainage Pond** |  | 2026-01-19 | 2026-03-14 |  |  |
|  | 11 | **Deep excavation, backfill, disposal for pond formation** |  | 2026-01-19 | 2026-03-14 |  |  |
| MOD-RCP-ER-002 |  | Mark and fence pond boundary for Rainwater Collection Ponds Zone 1 | 3d | 2026-01-19 | 2026-01-21 | MOD-GEI-SF-001, MIL-0006 | 101.8d |
| MOD-RCP-ER-003 |  | Excavate in layers to final depth for Rainwater Collection Ponds Zone 1 | 12d | 2026-01-22 | 2026-02-04 | MOD-RCP-ER-002 | 338.8d |
| MOD-RCP-ER-004 |  | Dewater during excavation for Rainwater Collection Ponds Zone 1 | 5d | 2026-02-05 | 2026-02-10 | MOD-RCP-ER-003 | 338.8d |
| MOD-RCP-ER-005 |  | Place warning tapes for Rainwater Collection Ponds Zone 1 | 6d | 2026-02-11 | 2026-02-19 | MOD-RCP-ER-004 | 338.8d |
| MOD-RCP-ER-006 |  | Dispose of rock/materials to approved dump area for Rainwater Collection Ponds Zone 1 | 7d | 2026-02-19 | 2026-03-05 | MOD-RCP-ER-005 | 338.8d |
| MOD-RCP-ER-007 |  | Backfill selected areas as per design for Rainwater Collection Ponds Zone 1 | 2d | 2026-03-07 | 2026-03-10 | MOD-RCP-ER-006, MOD-GEI-PL-001 | 338.8d |
| MOD-RCP-ER-008 |  | Final trimming and profiling for Rainwater Collection Ponds Zone 1 | 2d | 2026-03-10 | 2026-03-14 | MOD-RCP-ER-007 | 338.8d |
|  | 1 | **General Site Preparation** |  | 2026-02-16 | 2026-08-20 |  |  |
| MOD-RCP-GS-001 |  | Site demarcation for Rainwater Collection Ponds Zone 1 | 21d | 2026-02-16 | 2026-03-30 | MOD-GEI-SF-001, MOD-RCP-ER-002, MOD-RCP-GS-43 | 80.8d |
| MOD-RCP-GS-002 |  | Clearing and grubbing for Rainwater Collection Ponds Zone 1 | 21d | 2026-03-30 | 2026-04-23 | MOD-RCP-GS-001 | 80.8d |
| MOD-RCP-GS-0031 |  | Earthwork excavation (other than topsoil or rock) - Zone 1 (3 Ponds) - P1 | 21d | 2026-05-10 | 2026-06-08 | MOD-RCP-GS-002, MOD-RCP-GS-83 | 66.8d |
| MOD-RCP-GS-0032 |  | Earthwork excavation (other than topsoil or rock) - Zone 1 (2 Ponds) - P2 | 21d | 2026-06-08 | 2026-07-02 | MOD-RCP-GS-0031 SS, MOD-RCP-GS-0031 | 66.8d |
| MOD-RCP-GS-0041 |  | Transport and disposal to approved locations - Zone 1 (3 Ponds) - P1 | 21d | 2026-06-08 | 2026-07-02 | MOD-RCP-GS-0031 | 232.8d |
| MOD-RCP-GS-0033 |  | Earthwork excavation (other than topsoil or rock) - Zone 1 (2 Ponds) - P3 | 21d | 2026-07-02 | 2026-07-27 | MOD-RCP-GS-0032 | 66.8d |
| MOD-RCP-GS-0042 |  | Transport and disposal to approved locations - Zone 1 (2 Ponds) - P2 | 21d | 2026-07-02 | 2026-07-27 | MOD-RCP-GS-0041 SS, MOD-RCP-GS-0032 | 211.8d |
| MOD-RCP-GS-0043 |  | Transport and disposal to approved locations - Zone 1 (2 Ponds) - P3 | 21d | 2026-07-27 | 2026-08-20 | MOD-RCP-GS-0033 | 190.8d |
|  | 2 | **Backfilling Works** |  | 2026-07-27 | 2026-10-12 |  |  |
| MOD-RCP-BW-001 |  | Select material from excavation or import approved material for Rainwater Collection Ponds Zone 1 | 15d | 2026-07-27 | 2026-08-13 | MOD-RCP-GS-0031, MOD-RCP-GS-0033 | 66.8d |
| MOD-RCP-BW-002 |  | Place in layers not exceeding 300mm for Rainwater Collection Ponds Zone 1 | 21d | 2026-08-13 | 2026-09-07 | MOD-RCP-BW-001, MOD-RCP-GS-0033 | 167.8d |
| MOD-RCP-BW-003 |  | Compact each layer to required density for Rainwater Collection Ponds Zone 1 | 20d | 2026-09-07 | 2026-10-01 | MOD-RCP-BW-002, MOD-RCP-GS-0033 | 167.8d |
| MOD-RCP-BW-004 |  | Conduct field density tests for Rainwater Collection Ponds Zone 1 | 4d | 2026-10-01 | 2026-10-06 | MOD-RCP-BW-003, MOD-RCP-GS-0033 | 167.8d |
| MOD-RCP-BW-005 |  | Final leveling and approval for Rainwater Collection Ponds Zone 1 | 5d | 2026-10-06 | 2026-10-12 | MOD-RCP-BW-004, MOD-RCP-GS-0033 | 167.8d |
|  | 12 | **Geotextile & Bedding** |  | 2026-08-13 | 2026-10-31 |  |  |
|  | 13 | **Installation of geotextile lining and coarse sand bedding** |  | 2026-08-13 | 2026-10-31 |  |  |
| MOD-RCP-GB-002 |  | Trim subgrade to required level for Rainwater Collection Ponds Zone 1 | 7d | 2026-08-13 | 2026-08-22 | MOD-RCP-BW-001, MOD-RCP-GS-0033 | 66.8d |
| MOD-RCP-GB-003 |  | Lay HDPE geotextile membrane over compacted soil for Rainwater Collection Ponds Zone 1 | 21d | 2026-08-22 | 2026-09-15 | MOD-RCP-GB-002, MOD-RCP-GS-0033 | 66.8d |
| MOD-RCP-GB-004 |  | Place 500mm thick coarse sand bedding for Rainwater Collection Ponds Zone 1 | 21d | 2026-09-15 | 2026-10-11 | MOD-RCP-GB-003, MOD-RCP-GS-0033 | 151.8d |
| MOD-RCP-GB-005 |  | Compact and level bedding for Rainwater Collection Ponds Zone 1 | 17d | 2026-10-11 | 2026-10-31 | MOD-RCP-GB-004, MOD-RCP-GS-0033 | 151.8d |
|  | 3 | **Concrete Structures** |  | 2026-08-22 | 2026-10-14 |  |  |
|  | 4 | **Construction of pond slab, walls, vertical structures** |  | 2026-08-22 | 2026-10-14 |  |  |
| MOD-RCP-CS-002 |  | Clean the subgrade for Rainwater Collection Ponds Zone 1 | 2d | 2026-08-22 | 2026-08-24 | MOD-RCP-GB-003 SS, MOD-RCP-GS-0033 | 66.8d |
| MOD-RCP-CS-003 |  | Lay 100mm thick blinding (C15) for Rainwater Collection Ponds Zone 1 | 3d | 2026-08-24 | 2026-08-27 | MOD-RCP-CS-002, MOD-RCP-GS-0033 | 66.8d |
| MOD-RCP-CS-004 |  | Install formwork and reinforcement for Rainwater Collection Ponds Zone 1 | 8d | 2026-08-27 | 2026-09-06 | MOD-RCP-CS-003, MOD-RCP-GS-0033 | 66.8d |
| MOD-RCP-CS-005 |  | Cast base slab with C20 concrete (300–500mm thick) for Rainwater Collection Ponds Zone 1 | 4d | 2026-09-06 | 2026-09-10 | MOD-RCP-CS-004, MOD-RCP-GS-0033 | 66.8d |
| MOD-RCP-CS-006 |  | Construct sub-walls (150–300mm thick) for Rainwater Collection Ponds Zone 1 | 7d | 2026-09-10 | 2026-09-19 | MOD-RCP-CS-005, MOD-RCP-GS-0033 | 66.8d |
| MOD-RCP-CS-007 |  | Construct vertical structures (0.2–1.22m wide) for Rainwater Collection Ponds Zone 1 | 9d | 2026-09-19 | 2026-09-30 | MOD-RCP-CS-006, MOD-RCP-GS-0033, A102810 | 66.8d |
| MOD-RCP-CS-008 |  | Remove formwork after curing for Rainwater Collection Ponds Zone 1 | 3d | 2026-09-30 | 2026-10-04 | MOD-RCP-CS-007, MOD-RCP-GS-0033 | 165.8d |
| MOD-RCP-CS-009 |  | Apply power floating finish for Rainwater Collection Ponds Zone 1 | 2d | 2026-10-04 | 2026-10-06 | MOD-RCP-CS-008, MOD-RCP-GS-0033 | 165.8d |
| MOD-RCP-CS-010 |  | Apply waterproofing, bitumen, screed, perimeter lining for Rainwater Collection Ponds Zone 1 | 7d | 2026-10-06 | 2026-10-14 | MOD-RCP-CS-009, MOD-RCP-GS-0033 | 165.8d |
|  | 5 | **Energy Dissipation & Siphon Structures** |  | 2026-09-30 | 2026-11-18 |  |  |
|  | 6 | **Siphon pipes, energy dissipators, and associated civil works** |  | 2026-09-30 | 2026-11-18 |  |  |
| MOD-RCP-ED-002 |  | Excavate for low-level areas for Rainwater Collection Ponds Zone 1 | 3d | 2026-09-30 | 2026-10-04 | MOD-RCP-CS-007, MOD-RCP-GS-0033 | 66.8d |
| MOD-RCP-ED-003 |  | Lay granular bedding and compact for Rainwater Collection Ponds Zone 1 | 11d | 2026-10-04 | 2026-10-17 | MOD-RCP-ED-002, MOD-RCP-GS-0033 | 66.8d |
| MOD-RCP-ED-004 |  | Install siphon pipe with DI 90° bends for Rainwater Collection Ponds Zone 1 | 10d | 2026-10-17 | 2026-10-28 | MOD-RCP-ED-003, MOD-RCP-GS-0033 | 66.8d |
| MOD-RCP-ED-005 |  | Place coarse gravel tamping for Rainwater Collection Ponds Zone 1 | 8d | 2026-10-28 | 2026-11-07 | MOD-RCP-ED-004, MOD-RCP-GS-0033 | 66.8d |
| MOD-RCP-ED-006 |  | Construct reinforced concrete side walls for Rainwater Collection Ponds Zone 1 | 6d | 2026-11-07 | 2026-11-14 | MOD-RCP-ED-005, MOD-RCP-GS-0033 | 66.8d |
| MOD-RCP-ED-007 |  | Brickwork and finishing for Rainwater Collection Ponds Zone 1 | 2d | 2026-11-14 | 2026-11-16 | MOD-RCP-ED-006, MOD-RCP-GS-0033 | 66.8d |
| MOD-RCP-ED-008 |  | Install energy dissipators (gabion baffles, riprap) for Rainwater Collection Ponds Zone 1 | 2d | 2026-11-16 | 2026-11-18 | MOD-RCP-ED-007, MOD-RCP-GS-0033 | 135.8d |
|  | 4 | **Culvert Structures** |  | 2026-11-16 | 2027-02-08 |  |  |
| MOD-RCP-CL-001 |  | Excavate trench for culvert for Rainwater Collection Ponds Zone 1 | 1d | 2026-11-16 | 2026-11-17 | MOD-RCP-ED-007, MOD-RCP-GS-0033 | 66.8d |
| MOD-RCP-CL-002 |  | Compact subgrade and lay granular bedding for Rainwater Collection Ponds Zone 1 | 6d | 2026-11-17 | 2026-11-24 | MOD-RCP-CL-001, MOD-RCP-GS-0033 | 66.8d |
| MOD-RCP-CL-003 |  | Place precast box culverts (all sizes) for Rainwater Collection Ponds Zone 1 | 4d | 2026-11-24 | 2026-11-29 | MOD-RCP-CL-002, MOD-RCP-GS-0033 | 66.8d |

| ID | WBS | Task | Duration | Start | Finish | Predecessors | Total float |
| --- | --- | --- | --- | --- | --- | --- | --- |
| MOD-RCP-CL-004 |  | Align and joint culverts with sealing material for Rainwater Collection Ponds Zone 1 | 3d | 2026-11-29 | 2026-12-02 | MOD-RCP-CL-003, MOD-RCP-GS-0033 | 66.8d |
| MOD-RCP-CL-005 |  | Place backfill around and above culvert for Rainwater Collection Ponds Zone 1 | 2d | 2026-12-02 | 2026-12-05 | MOD-RCP-CL-004, MOD-RCP-GS-0033 | 66.8d |
| MOD-RCP-CL-006 |  | Compact in layers and test for Rainwater Collection Ponds Zone 1 | 2d | 2026-12-05 | 2026-12-07 | MOD-RCP-CL-005, MOD-RCP-GS-0033 | 94.8d |
| MOD-RCP-CL-007 |  | Final surface leveling and protection for Rainwater Collection Ponds Zone 1 | 4d | 2026-12-07 | 2026-12-12 | MOD-RCP-CL-006, MOD-RCP-GS-0033 | 94.8d |
|  | 8 | **Access Roads** |  | 2026-12-05 | 2027-02-08 |  |  |
|  | 9 | **Construct 3m & 5m wide roads** |  | 2026-12-05 | 2027-02-08 |  |  |
| MOD-RCP-AR-002 |  | Clear and grade road alignment for Rainwater Collection Ponds Zone 1 | 3d | 2026-12-05 | 2026-12-08 | MOD-RCP-CL-005, MOD-RCP-GS-0033 | 66.8d |
| MOD-RCP-AR-003 |  | Excavate and level subgrade for Rainwater Collection Ponds Zone 1 | 15d | 2026-12-08 | 2026-12-26 | MOD-RCP-AR-002, MOD-RCP-GS-0033 | 66.8d |
| MOD-RCP-AR-004 |  | Place and compact subbase for Rainwater Collection Ponds Zone 1 | 17d | 2026-12-26 | 2027-01-14 | MOD-RCP-AR-003, MOD-RCP-GS-0033 | 66.8d |
| MOD-RCP-AR-005 |  | Lay base course for Rainwater Collection Ponds Zone 1 | 23d | 2026-12-29 | 2027-01-25 | MOD-RCP-AR-004 SS+3d, MOD-RCP-GS-0033 | 66.8d |
| MOD-RCP-AR-006 |  | Apply asphalt (if applicable) or gravel surfacing for Rainwater Collection Ponds Zone 1 | 21d | 2027-01-06 | 2027-01-31 | MOD-RCP-AR-005 SS+7d, MOD-RCP-GS-0033 | 66.8d |
| MOD-RCP-AR-007 |  | Finish shoulders and install signage if required for Rainwater Collection Ponds Zone 1 | 6d | 2027-01-31 | 2027-02-08 | MOD-RCP-AR-006, MOD-RCP-GS-0033 | 66.8d |
|  | 3 | **Road Crossing Zone 1** |  | 2026-06-22 | 2027-01-23 |  |  |
|  | 14 | **uPVC Road Crossing Pipes** |  | 2026-06-22 | 2026-10-29 |  |  |
|  | 15 | **Installation of uPVC pipes of various diameters crossing roadways** |  | 2026-06-22 | 2026-10-29 |  |  |
| MOD-ROC-PV-100 |  | Demarcation and traffic diversion (if required) for Road Crossing Zone 1 | 6d | 2026-06-22 | 2026-06-29 | MOD-GEI-SF-001, MOD-ROC-PV-90, MOD-RCP-ER-002 | 152.8d |
| MOD-ROC-PV-110 |  | Saw cutting and removal of asphalt (if applicable) for Road Crossing Zone 1 | 12d | 2026-06-29 | 2026-07-13 | MOD-ROC-PV-100 | 152.8d |
| MOD-ROC-PV-120 |  | Excavation across road width to required depth for Road Crossing Zone 1 | 21d | 2026-07-13 | 2026-08-06 | MOD-ROC-PV-110, A1600 | 152.8d |
| MOD-ROC-PV-130 |  | Preparation of trench base with compacted bedding for Road Crossing Zone 1 | 15d | 2026-08-06 | 2026-08-24 | MOD-ROC-PV-120 | 152.8d |
| MOD-ROC-PV-140 |  | Laying of uPVC pipe (300mm, 315mm, 400mm, 600mm dia) for Road Crossing Zone 1 | 21d | 2026-08-24 | 2026-09-17 | MOD-ROC-PV-130 | 152.8d |
| MOD-ROC-PV-150 |  | Placement of supports and protection around the pipe for Road Crossing Zone 1 | 10d | 2026-09-17 | 2026-09-30 | MOD-ROC-PV-140 | 152.8d |
| MOD-ROC-PV-160 |  | Testing of installed pipeline for Road Crossing Zone 1 | 6d | 2026-09-30 | 2026-10-07 | MOD-ROC-PV-150 | 152.8d |
| MOD-ROC-PV-170 |  | Backfilling and compaction in layers for Road Crossing Zone 1 | 13d | 2026-10-07 | 2026-10-22 | MOD-ROC-PV-160, MOD-GEI-PL-001 | 152.8d |
| MOD-ROC-PV-180 |  | Reinstatement of road surface for Road Crossing Zone 1 | 6d | 2026-10-22 | 2026-10-29 | MOD-ROC-PV-170 | 152.8d |
|  | 16 | **GRP Road Crossing Pipes** |  | 2026-10-13 | 2027-01-23 |  |  |
|  | 17 | **Installation of GRP pipes (800mm–1000mm dia) for road crossings** |  | 2026-10-13 | 2027-01-23 |  |  |
| MOD-ROC-GR-100 |  | Set out location and coordinate with road authority for Road Crossing Zone 1 | 5d | 2026-10-13 | 2026-10-19 | MOD-ROC-PV-100, MOD-ROC-GR-90 | 79.8d |
| MOD-ROC-GR-110 |  | Excavate trench across road at designed depth for Road Crossing Zone 1 | 12d | 2026-10-19 | 2026-11-02 | MOD-ROC-GR-100 | 79.8d |
| MOD-ROC-GR-120 |  | Lay compacted granular bedding for Road Crossing Zone 1 | 12d | 2026-11-02 | 2026-11-16 | MOD-ROC-GR-110 | 79.8d |
| MOD-ROC-GR-130 |  | Install GRP pipe (800mm & 1000mm dia) for Road Crossing Zone 1 | 21d | 2026-11-16 | 2026-12-10 | MOD-ROC-GR-120 | 79.8d |
| MOD-ROC-GR-140 |  | Provide structural supports and closure at both ends for Road Crossing Zone 1 | 9d | 2026-12-10 | 2026-12-21 | MOD-ROC-GR-130, A102810 | 79.8d |
| MOD-ROC-GR-150 |  | Perform leak testing as per specifications for Road Crossing Zone 1 | 5d | 2026-12-21 | 2026-12-27 | MOD-ROC-GR-140 | 79.8d |
| MOD-ROC-GR-160 |  | Backfill and compact in layers for Road Crossing Zone 1 | 10d | 2026-12-27 | 2027-01-07 | MOD-ROC-GR-150, MOD-GEI-PL-001 | 79.8d |
| MOD-ROC-GR-170 |  | Reinstate road surface (asphalt/concrete) for Road Crossing Zone 1 | 8d | 2027-01-07 | 2027-01-17 | MOD-ROC-GR-160 | 79.8d |
| MOD-ROC-GR-180 |  | Final inspection and approval by relevant authority for Road Crossing Zone 1 | 5d | 2027-01-17 | 2027-01-23 | MOD-ROC-GR-170 | 79.8d |
|  | 1 | **General** |  | 2025-05-19 | 2027-05-18 |  |  |
|  | 5 | **General Items** |  | 2025-05-19 | 2025-06-17 |  |  |
|  | 1 | **Site Setup & Facilities** |  | 2025-05-19 | 2025-06-17 |  |  |
| MOD-GEI-SF-001 |  | Equip, install, and set up site offices | 30d | 2025-05-19 | 2025-06-17 | MIL-0001 | 180.12d |
|  | 2 | **Project Laboratory** |  | 2025-05-19 | 2025-06-17 |  |  |
| MOD-GEI-PL-001 |  | Equip, install, and set up project laboratory | 30d | 2025-05-19 | 2025-06-17 | MOD-GEI-SF-001 SS | 180.12d |
|  | 3 | **Local Roads** |  | 2026-08-29 | 2027-03-16 |  |  |
|  | 1 | **Bituminous Construction** |  | 2026-08-29 | 2026-12-27 |  |  |
|  | 1 | **Bituminous Foundation Layer (MC 1)** |  | 2026-08-29 | 2026-12-12 |  |  |
| MOD-LOR-BC-002 |  | Prepare subgrade for Local Roads | 4d | 2026-08-29 | 2026-09-02 | MOD-GEI-SF-001, MOD-ARR-PC-006 | 111.4d |
| MOD-LOR-BC-003 |  | Apply MC 1 bituminous layer for Local Roads | 4d | 2026-12-07 | 2026-12-12 | MOD-LOR-BC-002, A1160, A102730 SS, A103740 SS | 29.8d |
|  | 2 | **Bituminous Base Layer (Grade 1 - Class A, 70mm)** |  | 2026-12-12 | 2026-12-17 |  |  |
| MOD-LOR-BC-005 |  | Spread and compact bituminous mix for Local Roads | 5d | 2026-12-12 | 2026-12-17 | MOD-LOR-BC-003 | 29.8d |
|  | 3 | **Bituminous Top Layer (Grade 1 - Class A, 50mm)** |  | 2026-12-17 | 2026-12-27 |  |  |
| MOD-LOR-BC-007 |  | Apply adhesive layer (R.C) for Local Roads | 4d | 2026-12-17 | 2026-12-22 | MOD-LOR-BC-005 | 29.8d |
| MOD-LOR-BC-008 |  | Spread and compact bituminous concrete for Local Roads | 4d | 2026-12-22 | 2026-12-27 | MOD-LOR-BC-007 | 29.8d |
|  | 2 | **Precast Curbs (Type K1-D)** |  | 2026-12-27 | 2027-03-16 |  |  |
| MOD-LOR-PC-001 |  | Excavation & Subgrade Preparation for Local Roads | 8d | 2026-12-27 | 2027-01-05 | MOD-LOR-BC-008, A1600 | 29.8d |
| MOD-LOR-PC-002 |  | Pour concrete base & hunching for Local Roads | 8d | 2027-01-05 | 2027-01-14 | MOD-LOR-PC-001 | 29.8d |
| MOD-LOR-PC-003 |  | Install precast curbs for Local Roads | 20d | 2027-01-14 | 2027-02-08 | MOD-LOR-PC-002, A102820 | 29.8d |
| MOD-LOR-PC-004 |  | Backfill & compact for Local Roads | 8d | 2027-02-08 | 2027-02-24 | MOD-LOR-PC-003, A102400, A102820, MOD-GEI-PL-001 | 29.8d |
| MOD-LOR-PC-005 |  | Finishing & Waste Disposal for Local Roads | 8d | 2027-02-24 | 2027-03-16 | MOD-LOR-PC-004 | 29.8d |
|  | 2 | **Arterial Roads** |  | 2026-05-07 | 2026-08-29 |  |  |
|  | 1 | **Earthworks** |  | 2026-05-07 | 2026-05-10 |  |  |
| MOD-ARR-EW-001 |  | Clear vegetation for Arterial Roads | 1d | 2026-05-07 | 2026-05-09 | MOD-GEI-SF-001, MOD-ROC-PV-006 | 140.8d |
| MOD-ARR-EW-002 |  | Site Grading for Arterial Roads | 1d | 2026-05-09 | 2026-05-10 | MOD-ARR-EW-001 | 140.8d |
|  | 2 | **Precast Curbs (Type K1-D)** |  | 2026-05-10 | 2026-08-29 |  |  |
| MOD-ARR-PC-001 |  | Excavation & Subgrade Prep for Arterial Roads | 8d | 2026-05-10 | 2026-05-19 | MOD-ARR-EW-002, A1600 | 140.8d |
| MOD-ARR-PC-002 |  | Concrete Base & Hunching for Arterial Roads | 8d | 2026-05-19 | 2026-06-02 | MOD-ARR-PC-001, A103790, A103810 | 140.8d |
| MOD-ARR-PC-003 |  | Curb Installation for Arterial Roads | 21d | 2026-07-07 | 2026-08-01 | MOD-ARR-PC-002, A102820 | 111.4d |
| MOD-ARR-PC-004 |  | Backfilling & Compaction for Arterial Roads | 8d | 2026-08-01 | 2026-08-10 | MOD-ARR-PC-003, A102400, A102820, MOD-GEI-PL-001 | 111.4d |
| MOD-ARR-PC-005 |  | Finishing for Arterial Roads | 8d | 2026-08-10 | 2026-08-19 | MOD-ARR-PC-004 | 111.4d |
| MOD-ARR-PC-006 |  | Waste Disposal for Arterial Roads | 8d | 2026-08-19 | 2026-08-29 | MOD-ARR-PC-005 | 111.4d |
|  | 4 | **Communications** |  | 2026-06-22 | 2027-05-18 |  |  |
|  | 1 | **Ductworks** |  | 2026-06-22 | 2027-02-14 |  |  |

| ID | WBS | Task | Duration | Start | Finish | Predecessors | Total float |
| --- | --- | --- | --- | --- | --- | --- | --- |
|  | 1 | **Concrete-Protected Service Culverts (50mm, 8 Outlets)** |  | 2026-06-22 | 2026-09-16 |  |  |
| MOD-COC-DW-002 |  | Trench Excavation for Communications | 14d | 2026-06-22 | 2026-07-08 | MOD-GEI-SF-001, A102260, A102790, MOD-ROC-PV-010 | 38.8d |
| MOD-COC-DW-003 |  | Culvert Installation & Concrete Protection for Communications | 18d | 2026-07-08 | 2026-07-29 | MOD-COC-DW-002 | 38.8d |
| MOD-COC-DW-004 |  | Backfilling & Compaction for Communications | 21d | 2026-07-29 | 2026-08-23 | MOD-COC-DW-003, MOD-GEI-PL-001 | 38.8d |
| MOD-COC-DW-005 |  | Testing & Restoration for Communications | 21d | 2026-08-23 | 2026-09-16 | MOD-COC-DW-004 | 74d |
|  | 2 | **Road Crossing Ducts (Exit 8)** |  | 2026-09-16 | 2027-02-14 |  |  |
| MOD-COC-DW-007 |  | Horizontal Directional Drilling (HDD) for Communications | 21d | 2026-09-16 | 2026-10-12 | MOD-COC-DW-003, MOD-COC-DW-005 | 74d |
| MOD-COC-DW-008 |  | Duct Installation & Joint Sealing for Communications | 15d | 2027-01-06 | 2027-01-24 | MOD-COC-DW-007, A102050, A102770 | 0d |
| MOD-COC-DW-009 |  | Asphalt/Paving Restoration for Communications | 15d | 2027-01-24 | 2027-02-14 | MOD-COC-DW-008, A1160, A102730 SS, A103740 SS, A103750 SS | 0d |
|  | 3 | **Manholes (Telecom, 2000x1000x1001mm)** |  | 2027-02-14 | 2027-05-18 |  |  |
| MOD-COC-MH-001 |  | Excavation & Dewatering for Communications | 16d | 2027-02-14 | 2027-03-20 | MOD-COC-DW-002, MOD-COC-DW-009, A1600 | 0d |
| MOD-COC-MH-002 |  | Concrete Works - Foundation - Wall - Roof for Communications | 10d | 2027-03-20 | 2027-03-31 | MOD-COC-MH-001, A102050, A102770, A103790, A103810, A103860 | 0d |
| MOD-COC-MH-003 |  | Frame/Cover Installation for Communications | 21d | 2027-03-31 | 2027-04-25 | MOD-COC-MH-002, A102050, A102770 | 0d |
| MOD-COC-MH-004 |  | Testing & Handover for Communications | 16d | 2027-04-25 | 2027-05-18 | MOD-COC-MH-003 | 0d |
|  | 11 | **Landscape** |  | 2026-07-29 | 2027-02-21 |  |  |
|  | 1 | **Supply & Planting of Trees and Shrubs** |  | 2026-08-18 | 2026-12-13 |  |  |
|  | 15 | **planting of trees, shrubs, and vines** |  | 2026-08-18 | 2026-12-13 |  |  |
| MOD-LNS-PT-002 |  | Site demarcation and marking of plant locations for Landscape | 8d | 2026-08-18 | 2026-08-27 | MOD-LNS-GL-005 SS, MOD-COC-DW-004 SS | 38.8d |
| MOD-LNS-PT-003 |  | Excavation of planting pits as per specification for Landscape | 16d | 2026-08-27 | 2026-09-15 | MOD-LNS-PT-002, A1600 | 38.8d |
| MOD-LNS-PT-004 |  | Placement of sweet soil/potting soil as required for Landscape | 21d | 2026-09-15 | 2026-10-11 | MOD-LNS-PT-003, A102390 | 38.8d |
| MOD-LNS-PT-005 |  | Placement of gravel bed for drainage (if applicable) for Landscape | 16d | 2026-10-11 | 2026-10-29 | MOD-LNS-PT-004, A102390 | 38.8d |
| MOD-LNS-PT-006 |  | Planting of Palm tree, shrubs and trees for Landscape | 6d | 2026-10-29 | 2026-11-05 | MOD-LNS-PT-005, A102390 | 38.8d |
| MOD-LNS-PT-007 |  | Backfilling and compacting around the plant base for Landscape | 4d | 2026-11-05 | 2026-11-10 | MOD-LNS-PT-006, MOD-GEI-PL-001 | 93.8d |
| MOD-LNS-PT-008 |  | Installation of semi-permeable membrane (if required) for Landscape | 16d | 2026-11-10 | 2026-11-29 | MOD-LNS-PT-007 | 93.8d |
| MOD-LNS-PT-009 |  | Initial watering and mulching for Landscape | 8d | 2026-11-29 | 2026-12-08 | MOD-LNS-PT-008 | 93.8d |
| MOD-LNS-PT-010 |  | Labeling/tagging (if specified) for Landscape | 4d | 2026-12-08 | 2026-12-13 | MOD-LNS-PT-009 | 93.8d |
|  | 16 | **Gravel Layer and Bed Preparation** |  | 2026-07-29 | 2026-09-10 |  |  |
|  | 17 | **Installation of gravel layers and soil beds to support planting and drainage.** |  | 2026-07-29 | 2026-09-10 |  |  |
| MOD-LNS-GL-002 |  | Grading of planting areas for Landscape | 2d | 2026-07-29 | 2026-08-01 | MOD-GEI-SF-001, MOD-COC-DW-004 SS | 38.8d |
| MOD-LNS-GL-003 |  | Excavation to required depth for Landscape | 5d | 2026-08-01 | 2026-08-06 | MOD-LNS-GL-002, A1600 | 38.8d |
| MOD-LNS-GL-004 |  | Placement of 50mm gravel layer for green areas for Landscape | 10d | 2026-08-06 | 2026-08-18 | MOD-LNS-GL-003, A102390 | 38.8d |
| MOD-LNS-GL-005 |  | Placement of 150mm gravel bed for drainage network for Landscape | 6d | 2026-08-18 | 2026-08-25 | MOD-LNS-GL-004, A102390 | 38.8d |
| MOD-LNS-GL-006 |  | Spreading and compacting the gravel for Landscape | 6d | 2026-08-25 | 2026-09-01 | MOD-LNS-GL-005 | 172.8d |
| MOD-LNS-GL-007 |  | Overlay of semi-permeable membrane (if applicable) for Landscape | 4d | 2026-09-01 | 2026-09-06 | MOD-LNS-GL-006 | 172.8d |
| MOD-LNS-GL-008 |  | Spreading of potting soil/sweet soil as top layer for Landscape | 4d | 2026-09-06 | 2026-09-10 | MOD-LNS-GL-007 | 172.8d |
|  | 2 | **Landscape Irrigation System** |  | 2026-11-05 | 2027-02-21 |  |  |
|  | 17 | **Design, supply, and installation of irrigation lines for arterial road landscape zones.** |  | 2026-11-05 | 2027-02-21 |  |  |
| MOD-LNS-LI-002 |  | Approval of design and layout by Owner/Engineer for Landscape | 7d | 2026-11-05 | 2026-11-14 | MOD-LNS-PT-006 | 38.8d |
| MOD-LNS-LI-003 |  | Excavation for main and lateral lines for Landscape | 14d | 2026-11-14 | 2026-11-30 | MOD-LNS-LI-002, A1600 | 38.8d |
| MOD-LNS-LI-004 |  | Supply and installation of irrigation piping and fittings for Landscape | 6d | 2026-11-30 | 2026-12-07 | MOD-LNS-LI-003 | 38.8d |
| MOD-LNS-LI-005 |  | Valve box installation and controller placement for Landscape | 14d | 2026-12-07 | 2026-12-23 | MOD-LNS-LI-004 | 38.8d |
| MOD-LNS-LI-006 |  | Connection to water source and pump system (if applicable) for Landscape | 20d | 2026-12-23 | 2027-01-16 | MOD-LNS-LI-005 | 38.8d |
| MOD-LNS-LI-007 |  | Testing of the irrigation network for leaks and performance for Landscape | 3d | 2027-01-16 | 2027-01-19 | MOD-LNS-LI-006 | 38.8d |
| MOD-LNS-LI-008 |  | Backfilling and surface reinstatement for Landscape | 17d | 2027-01-19 | 2027-02-09 | MOD-LNS-LI-007, MOD-GEI-PL-001 | 38.8d |
| MOD-LNS-LI-009 |  | Commissioning and operational approval for Landscape | 6d | 2027-02-10 | 2027-02-21 | MOD-LNS-LI-008 | 38.8d |
|  | 9 | **Testing & Commissioning & Closeout** |  | 2026-01-12 | 2027-05-18 |  |  |
|  | 1 | **Testing & Commissioning** |  | 2026-01-12 | 2027-05-18 |  |  |
|  | 1 | **Zone 3** |  | 2026-01-12 | 2027-01-19 |  |  |
| A103610 |  | Testing and Commissioning for Irrigation Network Zone 3 | 21d | 2026-01-12 | 2026-02-04 | MOD-IRN-EB-120, MOD-IRN-EB-130, MOD-IRN-EB-140, MOD-IRN-EB-150, MOD-IRN-EB-180, MOD-IRN-EB-190, MOD-IRN-VA-55, MOD-IRN-VA-65, MOD-IRN-VA-75, MOD-IRN-VA-85, MOD-IRN-VA-95, MOD-IRN-VR-107, MOD-IRN-VR-117, MOD-IRN-VR-127, MOD-IRN-VR-137, MOD-IRN-VR-77, MOD-IRN-VR-87, MOD-IRN-VR-97, MOD-IRN-WC-106, MOD-IRN-WC-116, MOD-IRN-WC-66, MOD-IRN-WC-76, MOD-IRN-WC-86, MOD-IRN-WC-96, MOD-IRN-AC-55, MOD-IRN-AC-65, MOD-IRN-AC-75, MOD-IRN-AC-85, MOD-IRN-AC-95, MOD-IRN-FC-106, MOD-IRN-FC-116, MOD-IRN-FC-66, MOD-IRN-FC-76, MOD-IRN-FC-86, MOD-IRN-FC-96 | 318.8d |
| A103590 |  | Testing and Commissioning for Rain Water Drainage Network Zone 3 | 21d | 2026-01-19 | 2026-02-11 | MOD-RWN-PL-233, MOD-RWN-PL-243, MOD-RWN-PL-253, MOD-RWN-PL-263, MOD-RWN-PL-283, MOD-RWN-PL-293, MOD-RWN-PL-313, MOD-RWN-PL-323, MOD-RWN-PL-333, MOD-RWN-PL-343, MOD-RWN-PL-344, MOD-RWN-PL-353, MOD-RWN-PL-373, MOD-RWN-PL-383, MOD-RWN-PL-393, MOD-RWN-PL-403, MOD-RWN-PL-413, MOD-RWN-PL-723, MOD-RWN-PC-234, MOD-RWN-PC-244, MOD-RWN-PC-254, MOD-RWN-PC-264, MOD-RWN-PC-274, MOD-RWN-PC-284, MOD-RWN-PC-294, MOD-RWN-PC-304, MOD-RWN-PC-314, MOD-RWN-PC-444, MOD-RWN-PC-454, MOD-RWN-PC-464, MOD-RWN-PC-324, MOD-RWN-PC-334, MOD-RWN-PC-344, MOD-RWN-PC-354, MOD-RWN-PC-364, MOD-RWN-PC-374, MOD-RWN-PC-384, MOD-RWN-PC-394, MOD-RWN-PC-404, MOD-RWN-PC-414, MOD-RWN-PC-424, MOD-RWN-PC-434, MOD-RWN-MH-234, MOD-RWN-MH-244, MOD-RWN-MH-254, MOD-RWN-MH-264, MOD-RWN-MH-274, MOD-RWN-MH-284, MOD-RWN-MH-294, MOD-RWN-MH-374, MOD-RWN-MH-384, MOD-RWN-MH-394, MOD-RWN-MH-404, MOD-RWN-MH-414, MOD-RWN-MH-424, MOD-RWN-MH-434, MOD-RWN-MH-304, MOD-RWN-MH-314, MOD-RWN-MH-324, MOD-RWN-MH-334, MOD-RWN-MH-344, MOD-RWN-MH-354, MOD-RWN-MH-364, MOD-RWN-CC-168, MOD-RWN-CC-178, MOD-RWN-CC-188, MOD-RWN-CC-198, MOD-RWN-CC-208, MOD-RWN-CC-218, MOD-RWN-CC-228, MOD-RWN-CC-238, MOD-RWN-CC-248, MOD-RWN-CC-258, MOD-RWN-CC-268, MOD-RWN-CC-278, MOD-RWN-CC-288, MOD-RWN-CC-298, MOD-RWN-CC-308, MOD-RWN-GO-101, MOD-RWN-GO-111, MOD-RWN-GO-121, MOD-RWN-GO-131, MOD-RWN-GO-141, MOD-RWN-GO-151, MOD-RWN-GO-161, MOD-RWN-GO-171, MOD-RWN-GO-181, MOD-RWN-BB-112, MOD-RWN-BB-122, MOD-RWN-BB-132, MOD-RWN-BB-142, MOD-RWN-BB-152, MOD-RWN-BB-162, MOD-RWN-BB-172, MOD-RWN-BB-182, MOD-RWN-BB-192, MOD-RWN-BB-202, MOD-RWN-DB-001, MOD-RWN-DB-002, MOD-RWN-DB-003, MOD-RWN-DB-004, MOD-RWN-DB-005, MOD-RWN-DB-006 | 312.8d |
| A103600 |  | Testing and Commissioning for Potable Water Network Zone 3 | 21d | 2026-01-19 | 2026-02-11 | MOD-PWN-PI-313, MOD-PWN-PI-323, MOD-PWN-PI-333, MOD-PWN-PI-343, MOD-PWN-PI-353, MOD-PWN-PI-363, MOD-PWN-VC-107, MOD-PWN-VC-117, MOD-PWN-VC-127, MOD-PWN-VC-137, MOD-PWN-VC-77, MOD-PWN-VC-87, MOD-PWN-VC-97, MOD-PWN-FM-55, MOD-PWN-FM-65, MOD-PWN-FM-75, MOD-PWN-FM-85, MOD-PWN-FM-95, MOD-PWN-WA-107, MOD-PWN-WA-117, MOD-PWN-WA-127, MOD-PWN-WA-137, MOD-PWN-WA-77, MOD-PWN-WA-87, MOD-PWN-WA-97 | 312.8d |
| A102060 |  | Testing and Commissioning for Sewerage Network Zone 3 | 21d | 2026-03-05 | 2026-04-09 | MOD-SWN-PW-265, MOD-SWN-PW-295, MOD-SWN-PW-305, MOD-SWN-PW-315, MOD-SWN-PW-325, MOD-SWN-PW-335, MOD-SWN-PW-275, MOD-SWN-PW-345, MOD-SWN-PW-355, MOD-SWN-PW-365, MOD-SWN-PW-375, MOD-SWN-PW-385, MOD-SWN-PW-285, MOD-SWN-PW-395, MOD-SWN-PW-405, MOD-SWN-PW-415, MOD-SWN-PW-425, MOD-SWN-PW-435, MOD-SWN-FV-55, MOD-SWN-FV-65, MOD-SWN-FV-75, MOD-SWN-FV-85, MOD-SWN-FV-95, MOD-SWN-PW-805, MOD-SWN-PW-815, MOD-SWN-PW-825, MOD-SWN-PW-835, MOD-SWN-VF-84, MOD-SWN-PW-845, MOD-SWN-PW-855, MOD-SWN-PW-865, MOD-SWN-PW-875, MOD-SWN-VF-94, MOD-SWN-PW-885, MOD-SWN-PW-895, MOD-SWN-PW-905, MOD-SWN-PW-915, MOD-SWN-VF-104, MOD-SWN-PW-925, MOD-SWN-PW-935, MOD-SWN-PW-945, MOD-SWN-PW-955, MOD-SWN-VF-114, MOD-SWN-MH-95, MOD-SWN-MH-185, MOD-SWN-PW-1605, MOD-SWN-PW-1615, MOD-SWN-PW-1625, MOD-SWN-PW-1635, MOD-SWN-MH-195, MOD-SWN-PW-1645, MOD-SWN-PW-1655, MOD-SWN-PW-1665, MOD-SWN-PW-1675, MOD-SWN-MH-205, MOD-SWN-PW-1685, MOD-SWN-PW-1695, MOD-SWN-PW-1705, MOD-SWN-PW-1715, MOD-SWN-MH-215, MOD-SWN-PW-1725, MOD-SWN-PW-1735, MOD-SWN-PW-1745, MOD-SWN-PW-1755 | 301.4d |
| A103620 |  | Testing and Commissioning for Pumping Station Zone 3 | 21d | 2026-12-27 | 2027-01-19 | MOD-PWN-PS-106, MOD-PWN-PS-116, MOD-PWN-PS-66, MOD-PWN-PS-76, MOD-PWN-PS-86, MOD-PWN-PS-96, MOD-PWN-PB-33, MOD-PWN-PB-43, MOD-PWN-PB-53, MOD-PWN-PE-108, MOD-PWN-PE-118, MOD-PWN-PE-128, MOD-PWN-PE-138, MOD-PWN-PE-148, MOD-PWN-PE-158, MOD-PWN-PE-88, MOD-PWN-PE-98, MOD-PWN-SP-22, MOD-PWN-SP-32, MOD-PWN-PG-44, MOD-PWN-PG-54, MOD-PWN-PG-64, MOD-PWN-PG-74, MOD-PWN-CS-33, MOD-PWN-CS-43, MOD-PWN-CS-53, MOD-PWN-WS-11, MOD-PWN-SL-55, MOD-PWN-SL-65, MOD-PWN-SL-75, MOD-PWN-SL-85, MOD-PWN-SL-95, MOD-SWN-PS-1004, MOD-SWN-PS-1014, MOD-SWN-PS-984, MOD-SWN-PS-994, MOD-SWN-PS-644, MOD-SWN-PS-654, MOD-SWN-PS-1124, MOD-SWN-PS-1134, MOD-SWN-PS-1144, MOD-SWN-PS-1154, MOD-SWN-PS-674, MOD-SWN-PS-934, MOD-SWN-PS-944, MOD-SWN-PS-714, MOD-SWN-PS-724, MOD-SWN-PS-734, MOD-SWN-PS-754, MOD-SWN-PS-844, MOD-SWN-PS-854, MOD-SWN-PS-864, MOD-SWN-PS-874, MOD-SWN-PS-884, MOD-SWN-PS-894, MOD-SWN-PS-904, MOD-SWN-PS-954, MOD-SWN-PS-1024, MOD-SWN-PS-1034, MOD-SWN-PS-1044, MOD-SWN-PS-1054, MOD-SWN-PS-1064, MOD-SWN-PS-1074, MOD-SWN-PS-1084, MOD-SWN-PS-1094, MOD-SWN-PS-1104 | 40.6d |
|  | 2 | **Zone 2** |  | 2026-01-14 | 2026-04-09 |  |  |
| A103660 |  | Testing and Commissioning for Potable Water Network Zone 2 | 21d | 2026-01-14 | 2026-02-07 | MOD-PWN-VC-7, MOD-PWN-VC-17, MOD-PWN-VC-27, MOD-PWN-VC-37, MOD-PWN-VC-47, MOD-PWN-VC-57, MOD-PWN-VC-67, MOD-PWN-FM-5, MOD-PWN-FM-15, MOD-PWN-FM-25, MOD-PWN-FM-35, MOD-PWN-FM-45, MOD-PWN-WA-7, MOD-PWN-WA-17, MOD-PWN-WA-27, MOD-PWN-WA-37, MOD-PWN-WA-47, MOD-PWN-WA-57, MOD-PWN-WA-67, MOD-PWN-PI-143, MOD-PWN-PI-153, MOD-PWN-PI-163, MOD-PWN-PI-173, MOD-PWN-PI-203, MOD-PWN-PI-213 | 316.8d |
| A103650 |  | Testing and Commissioning for Rain Water Drainage Network Zone 2 | 21d | 2026-01-19 | 2026-02-11 | MOD-RWN-PC-24, MOD-RWN-PC-34, MOD-RWN-PC-44, MOD-RWN-PC-54, MOD-RWN-PC-64, MOD-RWN-PC-74, MOD-RWN-PC-84, MOD-RWN-PC-94, MOD-RWN-PC-104, MOD-RWN-PC-114, MOD-RWN-PC-124, MOD-RWN-PC-134, MOD-RWN-PC-144, MOD-RWN-PC-154, MOD-RWN-PC-164, MOD-RWN-PC-174, MOD-RWN-PC-184, MOD-RWN-PC-194, MOD-RWN-PC-204, MOD-RWN-PC-214, MOD-RWN-PC-224, MOD-RWN-MH-24, MOD-RWN-MH-34, MOD-RWN-MH-44, MOD-RWN-MH-54, MOD-RWN-MH-64, MOD-RWN-MH-74, MOD-RWN-MH-84, MOD-RWN-MH-94, MOD-RWN-MH-104, MOD-RWN-MH-114, MOD-RWN-MH-124, MOD-RWN-MH-134, MOD-RWN-MH-144, MOD-RWN-MH-154, MOD-RWN-MH-164, MOD-RWN-MH-174, MOD-RWN-MH-184, MOD-RWN-MH-194, MOD-RWN-MH-204, MOD-RWN-MH-214, MOD-RWN-MH-224, MOD-RWN-CC-18, MOD-RWN-CC-28, MOD-RWN-CC-38, MOD-RWN-CC-48, MOD-RWN-CC-58, MOD-RWN-CC-68, MOD-RWN-CC-78, MOD-RWN-CC-88, MOD-RWN-CC-98, MOD-RWN-CC-108, MOD-RWN-CC-118, MOD-RWN-CC-128, MOD-RWN-CC-138, MOD-RWN-CC-148, MOD-RWN-CC-158, MOD-RWN-GO-11, MOD-RWN-GO-21, MOD-RWN-GO-31, MOD-RWN-GO-41, MOD-RWN-GO-51, MOD-RWN-GO-61, MOD-RWN-GO-71, MOD-RWN-GO-81, MOD-RWN-GO-91, MOD-RWN-BB-12, MOD-RWN-BB-22, MOD-RWN-BB-32, MOD-RWN-BB-42, MOD-RWN-BB-52, MOD-RWN-BB-62, MOD-RWN-BB-72, MOD-RWN-BB-82, MOD-RWN-BB-92, MOD-RWN-BB-102, MOD-RWN-PC-474, MOD-RWN-PC-484, MOD-RWN-PC-494, MOD-RWN-PL-733, MOD-RWN-PL-743, MOD-RWN-PL-753, MOD-RWN-PL-763, MOD-RWN-PL-773, MOD-RWN-PL-783, MOD-RWN-PL-793, MOD-RWN-PL-803, MOD-RWN-PL-813, MOD-RWN-PL-823, MOD-RWN-PL-833, MOD-RWN-PL-843, MOD-RWN-PL-853, MOD-RWN-PL-863, MOD-RWN-PL-873, MOD-RWN-PL-883, MOD-RWN-PL-893, MOD-RWN-PL-903 | 312.8d |
| A103670 |  | Testing and Commissioning for Irrigation Network Zone 2 | 21d | 2026-01-19 | 2026-02-11 | MOD-IRN-VA-5, MOD-IRN-VA-15, MOD-IRN-VA-25, MOD-IRN-VA-35, MOD-IRN-VA-45, MOD-IRN-VR-7, MOD-IRN-VR-17, MOD-IRN-VR-27, MOD-IRN-VR-37, MOD-IRN-VR-47, MOD-IRN-VR-57, MOD-IRN-VR-67, MOD-IRN-WC-6, MOD-IRN-WC-16, MOD-IRN-WC-26, MOD-IRN-WC-36, MOD-IRN-WC-46, MOD-IRN-WC-56, MOD-IRN-AC-5, MOD-IRN-AC-15, MOD-IRN-AC-25, MOD-IRN-AC-35, MOD-IRN-AC-45, MOD-IRN-FC-6, MOD-IRN-FC-16, MOD-IRN-FC-26, MOD-IRN-FC-36, MOD-IRN-FC-46, MOD-IRN-FC-56, MOD-IRN-EB-330, MOD-IRN-EB-340, MOD-IRN-EB-350, MOD-IRN-EB-360, MOD-IRN-EB-370, MOD-IRN-EB-380 | 312.8d |
| A103640 |  | Testing and Commissioning for Sewerage Network Zone 2 | 21d | 2026-03-05 | 2026-04-09 | MOD-SWN-PW-445, MOD-SWN-PW-455, MOD-SWN-PW-465, MOD-SWN-PW-475, MOD-SWN-PW-485, MOD-SWN-PW-495, MOD-SWN-PW-505, MOD-SWN-PW-515, MOD-SWN-PW-525, MOD-SWN-PW-535, MOD-SWN-PW-545, MOD-SWN-PW-555, MOD-SWN-PW-565, MOD-SWN-PW-575, MOD-SWN-PW-585, MOD-SWN-PW-595, MOD-SWN-PW-605, MOD-SWN-PW-615, MOD-SWN-VF-124, MOD-SWN-VF-134, MOD-SWN-VF-144, MOD-SWN-VF-154, MOD-SWN-PW-965, MOD-SWN-PW-975, MOD-SWN-PW-985, MOD-SWN-PW-995, MOD-SWN-PW-1005, MOD-SWN-PW-1015, MOD-SWN-PW-1025, MOD-SWN-PW-1035, MOD-SWN-PW-1045, MOD-SWN-PW-1055, MOD-SWN-PW-1065, MOD-SWN-PW-1075, MOD-SWN-PW-1085, MOD-SWN-PW-1095, MOD-SWN-PW-1105, MOD-SWN-PW-1115, MOD-SWN-MH-145, MOD-SWN-MH-155, MOD-SWN-MH-165, MOD-SWN-MH-175, MOD-SWN-PW-1445, MOD-SWN-PW-1455, MOD-SWN-PW-1465, MOD-SWN-PW-1475, MOD-SWN-PW-1485, MOD-SWN-PW-1495, MOD-SWN-PW-1505, MOD-SWN-PW-1515, MOD-SWN-PW-1525, MOD-SWN-PW-1535, MOD-SWN-PW-1545, MOD-SWN-PW-1555, MOD-SWN-PW-1565, MOD-SWN-PW-1575, MOD-SWN-PW-1585, MOD-SWN-PW-1595, MOD-SWN-FV-5, MOD-SWN-FV-15, MOD-SWN-FV-25, MOD-SWN-FV-35, MOD-SWN-FV-45, MOD-SWN-MH-45 | 280.4d |
|  | 3 | **Zone 1** |  | 2026-01-18 | 2027-01-21 |  |  |
| A103710 |  | Testing and Commissioning for Potable Water Network Zone 1 | 21d | 2026-01-18 | 2026-02-10 | MOD-PWN-VC-001, MOD-PWN-VC-002, MOD-PWN-VC-003, MOD-PWN-VC-004, MOD-PWN-VC-005, MOD-PWN-VC-006, MOD-PWN-VC-007, MOD-PWN-FM-001, MOD-PWN-FM-002, MOD-PWN-FM-003, MOD-PWN-FM-004, MOD-PWN-FM-005, MOD-PWN-WA-001, MOD-PWN-WA-002, MOD-PWN-WA-003, MOD-PWN-WA-004, MOD-PWN-WA-005, MOD-PWN-WA-006, MOD-PWN-WA-007, MOD-PWN-PI-373, MOD-PWN-PI-383, MOD-PWN-PI-393, MOD-PWN-PI-403, MOD-PWN-PI-413, MOD-PWN-PI-423 | 313.8d |
| A103700 |  | Testing and Commissioning for Rain Water Drainage Network Zone 1 | 21d | 2026-01-19 | 2026-02-11 | MOD-RWN-PC-002, MOD-RWN-PC-003, MOD-RWN-PC-004, MOD-RWN-PC-005, MOD-RWN-PC-006, MOD-RWN-PC-007, MOD-RWN-PC-008, MOD-RWN-PC-009, MOD-RWN-PC-010, MOD-RWN-PC-012, MOD-RWN-PC-013, MOD-RWN-PC-014, MOD-RWN-PC-015, MOD-RWN-PC-016, MOD-RWN-PC-018, MOD-RWN-PC-019, MOD-RWN-PC-020, MOD-RWN-PC-504, MOD-RWN-PC-514, MOD-RWN-PC-524, MOD-RWN-PL-913, MOD-RWN-PL-923, MOD-RWN-PL-933, MOD-RWN-PL-943, MOD-RWN-PL-953, MOD-RWN-PL-963, MOD-RWN-PL-973, MOD-RWN-PL-983, MOD-RWN-PL-993, MOD-RWN-PL-1003, MOD-RWN-PL-1013, MOD-RWN-PL-1023, MOD-RWN-PL-1033, MOD-RWN-PL-1043, MOD-RWN-PL-1053, MOD-RWN-PL-1063, MOD-RWN-PL-1073, MOD-RWN-PL-1083, MOD-RWN-PC-021, MOD-RWN-PC-022, MOD-RWN-PC-023, MOD-RWN-PC-024, MOD-RWN-MH-002, MOD-RWN-MH-003, MOD-RWN-MH-004, MOD-RWN-MH-005, MOD-RWN-MH-006, MOD-RWN-MH-007, MOD-RWN-MH-008, MOD-RWN-MH-010, MOD-RWN-MH-011, MOD-RWN-MH-012, MOD-RWN-MH-013, MOD-RWN-MH-014, MOD-RWN-MH-015, MOD-RWN-MH-016, MOD-RWN-MH-018, MOD-RWN-MH-019, MOD-RWN-MH-020, MOD-RWN-MH-021, MOD-RWN-MH-022, MOD-RWN-MH-023, MOD-RWN-MH-024, MOD-RWN-CC-002, MOD-RWN-CC-003, MOD-RWN-CC-004, MOD-RWN-CC-005, MOD-RWN-CC-006, MOD-RWN-CC-008, MOD-RWN-CC-009, MOD-RWN-CC-010, MOD-RWN-CC-011, MOD-RWN-CC-012, MOD-RWN-CC-014, MOD-RWN-CC-015, MOD-RWN-CC-016, MOD-RWN-CC-017, MOD-RWN-CC-018, MOD-RWN-GO-002, MOD-RWN-GO-003, MOD-RWN-GO-004, MOD-RWN-GO-005, MOD-RWN-GO-006, MOD-RWN-GO-008, MOD-RWN-GO-009, MOD-RWN-GO-010, MOD-RWN-GO-011, MOD-RWN-BB-002, MOD-RWN-BB-003, MOD-RWN-BB-004, MOD-RWN-BB-005, MOD-RWN-BB-006, MOD-RWN-BB-008, MOD-RWN-BB-009, MOD-RWN-BB-010, MOD-RWN-BB-011, MOD-RWN-BB-012 | 312.8d |
| A103720 |  | Testing and Commissioning for Irrigation Network Zone 1 | 21d | 2026-01-19 | 2026-02-11 | MOD-IRN-EB-390, MOD-IRN-EB-400, MOD-IRN-EB-410, MOD-IRN-EB-420, MOD-IRN-EB-430, MOD-IRN-EB-440, MOD-IRN-VA-001, MOD-IRN-VA-002, MOD-IRN-VA-003, MOD-IRN-VA-004, MOD-IRN-VA-005, MOD-IRN-VR-001, MOD-IRN-VR-002, MOD-IRN-VR-003, MOD-IRN-VR-004, MOD-IRN-VR-005, MOD-IRN-VR-006, MOD-IRN-VR-007, MOD-IRN-WC-001, MOD-IRN-WC-002, MOD-IRN-WC-003, MOD-IRN-WC-004, MOD-IRN-WC-005, MOD-IRN-WC-006, MOD-IRN-AC-001, MOD-IRN-AC-002, MOD-IRN-AC-003, MOD-IRN-AC-004, MOD-IRN-AC-005, MOD-IRN-FC-001, MOD-IRN-FC-002, MOD-IRN-FC-003, MOD-IRN-FC-004, MOD-IRN-FC-005, MOD-IRN-FC-006 | 312.8d |
| A103690 |  | Testing and Commissioning for Sewerage Network Zone 1 | 21d | 2026-02-11 | 2026-03-25 | MOD-SWN-FV-001, MOD-SWN-FV-002, MOD-SWN-FV-003, MOD-SWN-FV-004, MOD-SWN-FV-005, MOD-SWN-MH-005, MOD-SWN-PW-625, MOD-SWN-PW-635, MOD-SWN-PW-645, MOD-SWN-PW-655, MOD-SWN-PW-665, MOD-SWN-PW-675, MOD-SWN-PW-685, MOD-SWN-PW-695, MOD-SWN-PW-705, MOD-SWN-PW-715, MOD-SWN-PW-725, MOD-SWN-PW-735, MOD-SWN-PW-745, MOD-SWN-PW-755, MOD-SWN-PW-765, MOD-SWN-PW-775, MOD-SWN-PW-785, MOD-SWN-PW-795, MOD-SWN-VF-164, MOD-SWN-VF-174, MOD-SWN-VF-184, MOD-SWN-VF-194, MOD-SWN-PW-1125, MOD-SWN-PW-1135, MOD-SWN-PW-1145, MOD-SWN-PW-1155, MOD-SWN-PW-1165, MOD-SWN-PW-1175, MOD-SWN-PW-1185, MOD-SWN-PW-1195, MOD-SWN-PW-1205, MOD-SWN-PW-1215, MOD-SWN-PW-1225, MOD-SWN-PW-1235, MOD-SWN-PW-1245, MOD-SWN-PW-1255, MOD-SWN-PW-1265, MOD-SWN-PW-1275, MOD-SWN-MH-105, MOD-SWN-MH-115, MOD-SWN-MH-125, MOD-SWN-MH-135, MOD-SWN-PW-1285, MOD-SWN-PW-1295, MOD-SWN-PW-1305, MOD-SWN-PW-1315, MOD-SWN-PW-1325, MOD-SWN-PW-1335, MOD-SWN-PW-1345, MOD-SWN-PW-1355, MOD-SWN-PW-1365, MOD-SWN-PW-1375, MOD-SWN-PW-1385, MOD-SWN-PW-1395, MOD-SWN-PW-1405, MOD-SWN-PW-1415, MOD-SWN-PW-1425, MOD-SWN-PW-1435 | 292.8d |
| A103730 |  | Testing and Commissioning for Pumping Station Zone 1 | 21d | 2026-12-29 | 2027-01-21 | MOD-SWN-PS-002, MOD-SWN-PS-003, MOD-SWN-PS-004, MOD-SWN-PS-0081, MOD-SWN-PS-010, MOD-SWN-PS-012, MOD-SWN-PS-013, MOD-SWN-PS-014, MOD-SWN-PS-019, MOD-SWN-PS-022, MOD-SWN-PS-023, MOD-SWN-PS-024, MOD-SWN-PS-025, MOD-SWN-PS-026, MOD-SWN-PS-027, MOD-SWN-PS-028, MOD-SWN-PS-029, MOD-SWN-PS-038, MOD-SWN-PS-039, MOD-SWN-PS-043, MOD-SWN-PS-045, MOD-SWN-PS-046, MOD-SWN-PS-049, MOD-SWN-PS-050, MOD-SWN-PS-052, MOD-SWN-PS-054, MOD-SWN-PS-055, MOD-SWN-PS-056, MOD-SWN-PS-058, MOD-SWN-PS-059, MOD-SWN-PS-061, MOD-SWN-PS-062, MOD-SWN-PS-064, MOD-PWN-PS-66, MOD-PWN-PS-76, MOD-PWN-PS-86, MOD-PWN-PS-96, MOD-PWN-PS-106, MOD-PWN-PS-116, MOD-PWN-PB-33, MOD-PWN-PB-43, MOD-PWN-PB-53, MOD-PWN-PE-88, MOD-PWN-PE-98, MOD-PWN-PE-108, MOD-PWN-PE-118, MOD-PWN-PE-128, MOD-PWN-PE-138, MOD-PWN-PE-148, MOD-PWN-PE-158, MOD-PWN-SP-22, MOD-PWN-SP-32, MOD-PWN-PG-44, MOD-PWN-PG-54, MOD-PWN-PG-64, MOD-PWN-PG-74, MOD-PWN-CS-33, MOD-PWN-CS-43, MOD-PWN-CS-53, MOD-PWN-WS-11, MOD-PWN-SL-55, MOD-PWN-SL-65, MOD-PWN-SL-75, MOD-PWN-SL-85, MOD-PWN-SL-95, MOD-SWN-PS-1164, MOD-SWN-PS-1174, MOD-SWN-PS-0082 | 38.6d |
|  | 4 | **General** |  | 2027-04-20 | 2027-05-18 |  |  |
| A103630 |  | Testing and Commissioning for Communication | 21d | 2027-04-20 | 2027-05-18 | MOD-COC-DW-002, MOD-COC-DW-003, MOD-COC-DW-004, MOD-COC-DW-005, MOD-COC-DW-007, MOD-COC-DW-008, MOD-COC-DW-009, MOD-COC-MH-004 FF+0.8d | 0d |
|  | 2 | **As-Built** |  | 2026-12-12 | 2027-05-18 |  |  |
| HO-13 |  | Earthworks as-built Submittals & Approval | 21d | 2026-12-12 | 2027-01-05 | MOD-RCP-GS-001, MOD-RCP-GS-002, MOD-RCP-GS-0031, MOD-RCP-GS-0032, MOD-RCP-GS-0033, MOD-RCP-GS-0041, MOD-RCP-GS-0042, MOD-RCP-GS-0043, MOD-RCP-GS-43, MOD-RCP-GS-53, MOD-RCP-GS-83, MOD-RCP-GS-93, MOD-RCP-GS-123, MOD-RCP-GS-133, MOD-RCP-GS-183, MOD-RCP-GS-193, MOD-RCP-CL-007 | 94.8d |
| HO-0001 |  | Mechanical as-built Submittals & Approval | 21d | 2027-01-23 | 2027-02-23 | A102060 SS, A103590, A103600, A103610, A103620, A103640, A103650, A103660, A103670, A103690, A103700, A103710, A103720, A103730 | 38.6d |
| HO-33 |  | Landscape as-built Submittals & Approval | 21d | 2027-02-23 | 2027-03-30 | MOD-LNS-PT-002, MOD-LNS-PT-003, MOD-LNS-PT-004, MOD-LNS-PT-005, MOD-LNS-PT-006, MOD-LNS-PT-007, MOD-LNS-PT-008, MOD-LNS-PT-009, MOD-LNS-PT-010, MOD-LNS-GL-002, MOD-LNS-GL-003, MOD-LNS-GL-004, MOD-LNS-GL-005, MOD-LNS-GL-006, MOD-LNS-GL-007, MOD-LNS-GL-008, MOD-LNS-LI-002, MOD-LNS-LI-003, MOD-LNS-LI-004, MOD-LNS-LI-005, MOD-LNS-LI-006, MOD-LNS-LI-007, MOD-LNS-LI-008, MOD-LNS-LI-009 | 38.8d |

| ID | WBS | Task | Duration | Start | Finish | Predecessors | Total float |
| --- | --- | --- | --- | --- | --- | --- | --- |
| HO-23 |  | Roadworks as-built Submittals & Approval | 21d | 2027-03-16 | 2027-04-10 | MOD-LOR-BC-002, MOD-LOR-BC-003, MOD-LOR-BC-005, MOD-LOR-BC-007, MOD-LOR-BC-008, MOD-LOR-PC-001, MOD-LOR-PC-002, MOD-LOR-PC-003, MOD-LOR-PC-004, MOD-LOR-PC-005, MOD-ARR-EW-001, MOD-ARR-EW-002, MOD-ARR-PC-001, MOD-ARR-PC-002, MOD-ARR-PC-003, MOD-ARR-PC-004, MOD-ARR-PC-005, MOD-ARR-PC-006 | 29.8d |
| HO-3 |  | Electrical as-built Submittals & Approval | 21d | 2027-04-20 | 2027-05-18 | A103630 FF, A103620, A103640, A103650, A103660, A103670, A103690, A103700, A103710, A103720, A103730 | 0d |
|  | 3 | **Handover** |  | 2027-04-20 | 2027-05-18 |  |  |
| HO-0003 |  | Handover & Demobilization | 21d | 2027-04-20 | 2027-05-18 | HO-0001, HO-3 FF | 0d |

## Version 2 (data date 2026-10-03, saved 2026-10-06, file 02.DAM3-02-008-WPR.56- 10-01-2026 XER.xer)

Last finish 2027-05-18 → 2027-10-24 (+159d). Complete tasks 0 → 481.

Changed:

| ID | Task | Start | Finish | Complete | Total float | Other |
| --- | --- | --- | --- | --- | --- | --- |
| 1 | **Milestones** |  | 2027-05-18 → 2027-10-24 (+159d) |  |  |  |
| MIL-0001 | Site Handover | 2025-05-19 A | 2025-05-19 A | 0% → 100% | 0d → none |  |
| MIL-0002 | Site Preparations | 2025-06-17 A | 2025-06-17 A | 0% → 100% | 700d → none |  |
| MIL-0003 | Submission of Report, Work Plan, and Schedule | 2025-07-17 → 2026-10-03 (+443d) | 2025-07-17 → 2026-10-03 (+443d) |  | 670d → 228d |  |
| MIL-0004 | Submission and Approval of Drawings and Specifications | 2025-07-16 → 2026-10-08 (+449d) | 2025-07-16 → 2026-10-08 (+449d) |  | 671d → -161d | constraint none → finish on 2026-04-30 |
| MIL-0005 | Completion of Water Networks and Tanks | 2026-01-18 → 2026-12-31 (+347d) | 2026-01-18 → 2026-12-31 (+347d) |  |  | constraint finish on or before 2026-01-18 → finish on 2026-12-31 |
| MIL-0006 | Completion of Rainwater Drainage Works | 2026-01-18 → 2026-12-31 (+347d) | 2026-01-18 → 2026-12-31 (+347d) |  | 0d → -157.57d | constraint finish on or before 2026-01-18 → finish on 2026-12-31 |
| MIL-0007 | Completion of All Project Services | 2027-05-18 → 2027-10-19 (+154d) | 2027-05-18 → 2027-10-19 (+154d) |  | 0.75d → -154d |  |
| MIL-0008 | Final Handover | 2027-05-18 → 2027-10-24 (+159d) | 2027-05-18 → 2027-10-24 (+159d) |  | 0d → -158.57d |  |
| 2 | **Mobilization** |  | 2025-08-13 → 2026-12-22 (+496d) |  |  |  |
| 1 | **Mobilization** |  | 2025-06-17 → 2025-06-25 (+8d) |  |  |  |
| A1070 | Mobilization of Manpower | 2025-05-19 A | 2025-06-17 → 2025-06-25 A (+8d) | 0% → 100% | 700d → none |  |
| A1080 | Mobilization of Equipment | 2025-05-19 A | 2025-06-17 → 2025-06-25 A (+8d) | 0% → 100% | 700d → none |  |
| 8 | **Deliverables** |  | 2025-08-13 → 2026-12-22 (+496d) |  |  |  |
| 1 | **Submittals** |  | 2025-08-02 → 2026-12-10 (+495d) |  |  |  |
| S10007 | Prepare & Submit Performance Bond | 2025-05-19 A | 2025-06-03 → 2025-05-19 A (-15d) | 0% → 100% | 180d → none |  |
| S100010 | Prepare & Submit Mobilization plan | 2025-05-19 A | 2025-05-29 → 2025-07-16 A (+48d) | 0% → 100% | 184d → none |  |
| S100013 | Prepare & Submit Site Security Management Plan | 2025-05-19 A | 2025-06-16 → 2025-07-15 A (+29d) | 0% → 100% | 174d → none |  |
| S100014 | Prepare & Submit Emergency Response Plan | 2025-05-19 A | 2025-06-16 → 2025-07-14 A (+28d) | 0% → 100% | 174d → none |  |
| S10002 | Prepare & Submit Method of Statement | 2025-05-19 A | 2025-06-16 → 2026-10-06 (+477d) | 0% → 80% | 174d → 68.4d |  |
| S10003 | Prepare & Submit Quality plan | 2025-05-19 A | 2025-06-16 → 2025-06-24 A (+8d) | 0% → 100% | 174d → none |  |
| S10004 | Prepare & Submit Construction Environmental Management Plan (CEMP) | 2025-05-19 A | 2025-06-22 → 2025-09-03 A (+73d) | 0% → 100% | 169d → none |  |
| S10005 | Prepare & Submit Safety plan | 2025-05-19 A | 2025-06-16 → 2025-06-19 A (+3d) | 0% → 100% | 174d → none |  |
| S10006 | Prepare & Submit Contractual Project Time Schedule | 2025-05-19 A | 2025-07-06 → 2025-08-05 A (+30d) | 0% → 100% | 157d → none |  |
| S10008 | Prepare & Submit Insurance | 2025-05-19 A | 2025-06-03 → 2025-07-17 A (+44d) | 0% → 100% | 180d → none |  |
| S10001 | Prepare & Submit Organization Chart | 2025-05-19 → 2025-05-29 A (+10d) | 2025-06-04 → 2025-05-29 A (-6d) | 0% → 100% | 179d → none |  |
| S100012 | Prepare & Submit Document Control Plan | 2025-05-19 → 2025-08-23 A (+96d) | 2025-06-04 → 2025-08-24 A (+81d) | 0% → 100% | 179d → none |  |
| S100016 | Prepare & Submit Operability and Maintainability Plan | 2025-05-19 → 2025-08-23 A (+96d) | 2025-06-16 → 2025-08-24 A (+69d) | 0% → 100% | 174d → none |  |
| S10009 | Prepare & Submit Procurement Plan | 2025-05-19 → 2025-10-01 A (+135d) | 2025-06-28 → 2025-10-01 A (+95d) | 0% → 100% | 164d → none |  |
| S100011 | Prepare & Submit Interface management plan | 2025-05-19 → 2026-01-16 A (+242d) | 2025-06-28 → 2026-01-18 A (+204d) | 0% → 100% | 164d → none |  |
| S100015 | Prepare & Submit Pre-commissioning/ Commissioning Plan/ Startup/ Testing / Handover Plan | 2025-05-19 → 2026-10-03 (+502d) | 2025-08-02 → 2026-12-10 (+495d) |  | 134d → 7.4d |  |
| 2 | **Approvals** | 2025-05-31 → 2025-05-19 (-12d) | 2025-08-13 → 2026-12-22 (+496d) |  |  |  |
| S100156 | Approval of Performance Bond | 2025-06-04 → 2025-05-19 A (-16d) | 2025-06-21 → 2025-05-19 A (-33d) | 0% → 100% | 180d → none |  |
| S100036 | Approval of Mobilization plan | 2025-05-31 A | 2025-06-16 → 2025-07-21 A (+35d) | 0% → 100% | 184d → none |  |
| S100166 | Approval of Insurance | 2025-06-04 A | 2025-06-21 → 2025-07-17 A (+26d) | 0% → 100% | 180d → none |  |
| S100066 | Approval of Site Security Management Plan | 2025-06-17 A | 2025-06-28 → 2025-07-29 A (+31d) | 0% → 100% | 174d → none |  |
| S100116 | Approval of Quality plan | 2025-06-17 A | 2025-06-28 → 2025-07-21 A (+23d) | 0% → 100% | 174d → none |  |
| S100106 | Approval of Method of Statement | 2025-06-17 → 2025-07-17 A (+30d) | 2025-06-28 → 2026-10-12 (+471d) | 0% → 50% | 174d → 68.4d |  |
| S100146 | Approval of Contractual Project Time Schedule | 2025-07-07 → 2025-07-31 A (+24d) | 2025-07-17 → 2025-08-12 A (+26d) | 0% → 100% | 157d → none |  |
| S100056 | Approval of Document Control Plan | 2025-06-11 → 2025-08-23 A (+73d) | 2025-06-22 → 2025-08-24 A (+63d) | 0% → 100% | 179d → none |  |
| S100096 | Approval of Operability and Maintainability Plan | 2025-06-17 → 2025-08-23 A (+67d) | 2025-06-28 → 2025-08-24 A (+57d) | 0% → 100% | 174d → none |  |
| S100126 | Approval of Construction Environmental Management Plan (CEMP) | 2025-06-23 → 2025-09-03 A (+72d) | 2025-07-03 → 2025-09-10 A (+69d) | 0% → 100% | 169d → none |  |
| S100136 | Approval of Safety plan | 2025-06-17 → 2025-10-02 A (+107d) | 2025-06-28 → 2025-10-02 A (+96d) | 0% → 100% | 174d → none |  |
| S100176 | Approval of Procurement Plan | 2025-06-29 → 2025-10-02 A (+95d) | 2025-07-09 → 2025-10-02 A (+85d) | 0% → 100% | 164d → none |  |
| S100026 | Approval of Organization Chart | 2025-06-11 → 2025-10-18 A (+129d) | 2025-06-22 → 2025-10-19 A (+119d) | 0% → 100% | 179d → none |  |
| S100076 | Approval of Emergency Response Plan | 2025-06-17 → 2025-10-18 A (+123d) | 2025-06-28 → 2025-10-20 A (+114d) | 0% → 100% | 174d → none |  |
| S100046 | Approval of Interface management plan | 2025-06-29 → 2026-01-17 A (+202d) | 2025-07-09 → 2026-01-23 A (+198d) | 0% → 100% | 164d → none |  |
| S100086 | Approval of Pre-commissioning/ Commissioning Plan/ Startup/ Testing / Handover Plan | 2025-08-03 → 2026-12-12 (+496d) | 2025-08-13 → 2026-12-22 (+496d) |  | 134d → 7.4d |  |
| 7 | **Engineering** | 2025-05-19 → 2025-05-20 (+1d) | 2026-11-08 → 2026-10-14 (-25d) |  |  |  |
| 3 | **Shop Drawing** | 2025-05-19 → 2025-05-20 (+1d) | 2025-07-16 → 2026-10-08 (+449d) |  |  |  |
| 1 | **Submittals** | 2025-05-19 → 2025-05-20 (+1d) | 2025-07-02 → 2026-04-01 (+273d) |  |  |  |
| A1550 | Earthworks details submittal | 2025-05-19 → 2025-05-20 A (+1d) | 2025-07-02 → 2025-07-21 A (+19d) | 0% → 100% | 67d → none |  |
| A1560 | Roadworks details submittal | 2025-05-19 → 2025-05-20 A (+1d) | 2025-07-02 → 2025-07-21 A (+19d) | 0% → 100% | 457.6d → none |  |
| A1590 | Electrical details submittal | 2025-05-19 → 2025-05-20 A (+1d) | 2025-07-02 → 2025-07-21 A (+19d) | 0% → 100% | 457.6d → none |  |
| A1620 | Mechanical details submittal | 2025-05-19 → 2025-05-20 A (+1d) | 2025-07-02 → 2025-09-01 A (+61d) | 0% → 100% | 97d → none |  |
| A1580 | Landscape details submittal | 2025-05-19 → 2026-01-01 A (+227d) | 2025-07-02 → 2026-04-01 A (+273d) | 0% → 100% | 457.6d → none |  |
| 2 | **Approvals** | 2025-07-03 → 2025-07-06 (+3d) | 2025-07-16 → 2026-10-08 (+449d) |  |  |  |
| A1600 | Earthworks details approval | 2025-07-03 → 2025-07-06 A (+3d) | 2025-07-16 → 2025-08-28 A (+43d) | 0% → 100% | 67d → none |  |
| A1610 | Roadworks details approval | 2025-07-03 → 2025-07-06 A (+3d) | 2025-07-16 → 2025-08-28 A (+43d) | 0% → 100% | 457.6d → none |  |
| A1640 | Electrical details approval | 2025-07-03 → 2025-07-06 A (+3d) | 2025-07-16 → 2025-08-28 A (+43d) | 0% → 100% | 457.6d → none |  |
| A1650 | Mechanical details approval | 2025-07-03 → 2025-07-06 A (+3d) | 2025-07-16 → 2025-09-01 A (+47d) | 0% → 100% | 97d → none |  |
| A1630 | Landscape details approval | 2025-07-03 → 2026-03-01 A (+241d) | 2025-07-16 → 2026-10-08 (+449d) | 0% → 50% | 457.6d → -112d |  |
| 1 | **Material Submittal & Approval** | 2025-06-22 → 2025-05-26 (-27d) | 2026-11-08 → 2026-10-14 (-25d) |  |  |  |
| 20 | **Long Lead Items** | 2025-06-22 → 2025-06-18 (-4d) | 2026-02-19 → 2026-10-07 (+230d) |  |  |  |
| 8 | **Pipes (DI / GRP) - For potable, irrigation, sewer, storm** | 2025-07-03 → 2025-06-18 (-15d) | 2025-07-28 → 2025-07-22 (-6d) |  |  |  |
| A1140 | Material Submittal for Pipes (DI / GRP) - For potable, irrigation, sewer, storm | 2025-07-03 → 2025-06-18 A (-15d) | 2025-07-20 → 2025-07-16 A (-4d) | 0% → 100% | 0.1d → none |  |
| A1150 | Material Approval for Pipes (DI / GRP) - For potable, irrigation, sewer, storm | 2025-07-21 → 2025-06-24 A (-27d) | 2025-07-28 → 2025-07-22 A (-6d) | 0% → 100% | 0.1d → none |  |
| 2 | **Drainage Channel Covers (GRP / DI) - For storm and wastewater** | 2025-07-03 → 2025-06-18 (-15d) | 2025-08-05 → 2025-07-24 (-12d) |  |  |  |
| A102830 | Material Submittal for Drainage Channel Covers (GRP / DI) - For storm and wastewater | 2025-07-03 → 2025-06-18 A (-15d) | 2025-07-27 → 2025-07-16 A (-11d) | 0% → 100% | 1d → none |  |
| A102840 | Material Approval for Drainage Channel Covers (GRP / DI) - For storm and wastewater | 2025-07-28 → 2025-06-24 A (-34d) | 2025-08-05 → 2025-07-24 A (-12d) | 0% → 100% | 1d → none |  |

| ID | Task | Start | Finish | Complete | Total float |
| --- | --- | --- | --- | --- | --- |
| 4 | **Manholes (Precast / Cast in situ) - All networks** | 2025-07-03 → 2025-07-20 (+17d) | 2025-07-30 → 2025-07-29 (-1d) |  |  |
| A102850 | Material Submittal for Manholes (Precast / Cast in situ) - All networks | 2025-07-03 → 2025-07-20 A (+17d) | 2025-07-21 → 2025-07-24 A (+3d) | 0% → 100% | 0d → none |
| A102860 | Material Approval for Manholes (Precast / Cast in situ) - All networks | 2025-07-22 → 2025-07-29 A (+7d) | 2025-07-30 → 2025-07-29 A (-1d) | 0% → 100% | 0d → none |
| 3 | **Control & Instrumentation Devices - Flow meters, pressure sensors** | 2025-07-03 → 2025-07-20 (+17d) | 2025-07-30 → 2025-09-02 (+34d) |  |  |
| A102870 | Material Submittal for Control & Instrumentation Devices - Flow meters, pressure sensors | 2025-07-03 → 2025-07-20 A (+17d) | 2025-07-21 → 2025-08-07 A (+17d) | 0% → 100% | 1d → none |
| A102880 | Material Approval for Control & Instrumentation Devices - Flow meters, pressure sensors | 2025-07-22 → 2025-08-04 A (+13d) | 2025-07-30 → 2025-09-02 A (+34d) | 0% → 100% | 1d → none |
| 10 | **Pumps (Sewage, Irrigation, Booster) - Especially for pumping stations** | 2025-06-22 → 2025-08-12 (+51d) | 2025-07-17 → 2025-10-16 (+91d) |  |  |
| A102890 | Material Submittal for Pumps (Sewage, Irrigation, Booster) - Especially for pumping stations | 2025-06-22 → 2025-08-12 A (+51d) | 2025-07-08 → 2025-10-09 A (+93d) | 0% → 100% | 0d → none |
| A102900 | Material Approval for Pumps (Sewage, Irrigation, Booster) - Especially for pumping stations | 2025-07-09 → 2025-10-08 A (+91d) | 2025-07-17 → 2025-10-16 A (+91d) | 0% → 100% | 0d → none |
| 6 | **Lighting Poles & Fixtures - External works, Roads, PS** |  | 2025-07-30 → 2025-08-07 (+8d) |  |  |
| A102910 | Material Submittal for Lighting Poles & Fixtures - External works, Roads, PS | 2025-07-03 A | 2025-07-21 → 2025-08-05 A (+15d) | 0% → 100% | 0d → none |
| A102920 | Material Approval for Lighting Poles & Fixtures - External works, Roads, PS | 2025-07-22 A | 2025-07-30 → 2025-08-07 A (+8d) | 0% → 100% | 0d → none |
| 13 | **Generators & Fuel Tanks - PS & Control Bldg backup power** | 2025-07-03 → 2025-07-20 (+17d) | 2025-07-30 → 2026-10-07 (+434d) |  |  |
| A102930 | Material Submittal for Generators & Fuel Tanks - PS & Control Bldg backup power | 2025-07-03 → 2025-07-20 A (+17d) | 2025-07-21 → 2026-10-06 (+442d) | 0% → 80% | 0d → 0.79d |
| A102940 | Material Approval for Generators & Fuel Tanks - PS & Control Bldg backup power | 2025-07-22 → 2025-12-15 A (+146d) | 2025-07-30 → 2026-10-07 (+434d) | 0% → 80% | 0d → 0.79d |
| 12 | **Cable Trays / Electrical Panels (MCC) - PS and Control Buildings** | 2026-01-22 → 2025-07-20 (-186d) | 2026-02-19 → 2025-08-24 (-179d) |  |  |
| A102950 | Material Submittal for Cable Trays / Electrical Panels (MCC) - PS and Control Buildings | 2026-01-22 → 2025-07-20 A (-186d) | 2026-02-09 → 2025-07-24 A (-200d) | 0% → 100% | 36.8d → none |
| A102960 | Material Approval for Cable Trays / Electrical Panels (MCC) - PS and Control Buildings | 2026-02-10 → 2025-08-24 A (-170d) | 2026-02-19 → 2025-08-24 A (-179d) | 0% → 100% | 36.8d → none |
| 11 | **Odor Control Units - Sewer PS-specific** | 2025-11-16 → 2025-07-22 (-117d) | 2025-12-11 → 2025-08-13 (-120d) |  |  |
| A102970 | Material Submittal for Odor Control Units - Sewer PS-specific | 2025-11-16 → 2025-07-22 A (-117d) | 2025-12-02 → 2025-07-28 A (-127d) | 0% → 100% | 0d → none |
| A102980 | Material Approval for Odor Control Units - Sewer PS-specific | 2025-12-03 → 2025-08-02 A (-123d) | 2025-12-11 → 2025-08-13 A (-120d) | 0% → 100% | 0d → none |
| 21 | **Short Lead Items** | 2025-07-03 → 2025-05-26 (-38d) | 2026-11-08 → 2026-10-14 (-25d) |  |  |
| 1 | **Asphalt** | 2026-10-11 → 2025-08-05 (-432d) | 2026-11-08 → 2025-09-21 (-413d) |  |  |
| A102990 | Material Submittal for Asphalt | 2026-10-11 → 2025-08-05 A (-432d) | 2026-10-28 → 2025-09-21 A (-402d) | 0% → 100% | 17d → none |
| A103000 | Material Approval for Asphalt | 2026-10-28 → 2025-08-05 A (-449d) | 2026-11-08 → 2025-09-21 A (-413d) | 0% → 100% | 17d → none |
| 8 | **Pipes (HDPE / uPVC) - For potable, irrigation, sewer, storm** | 2025-07-03 → 2025-05-26 (-38d) | 2025-07-30 → 2025-06-24 (-36d) |  |  |
| A103010 | Material Submittal for Pipes (HDPE / uPVC) - For potable, irrigation, sewer, storm | 2025-07-03 → 2025-05-26 A (-38d) | 2025-07-21 → 2025-05-26 A (-56d) | 0% → 100% | 11d → none |
| A103020 | Material Approval for Pipes (HDPE / uPVC) - For potable, irrigation, sewer, storm | 2025-07-22 → 2025-05-27 A (-56d) | 2025-07-30 → 2025-06-24 A (-36d) | 0% → 100% | 11d → none |
| 9 | **Valves (Gate, Air, NRV, Flow Control) - All water & drainage systems** |  | 2025-07-30 → 2026-05-02 (+276d) |  |  |
| A103030 | Material Submittal for Valves (Gate, Air, NRV, Flow Control) - All water & drainage systems | 2025-07-03 A | 2025-07-21 → 2025-07-23 A (+2d) | 0% → 100% | 0d → none |
| A103040 | Material Approval for Valves (Gate, Air, NRV, Flow Control) - All water & drainage systems | 2025-07-22 → 2025-07-29 A (+7d) | 2025-07-30 → 2026-05-02 A (+276d) | 0% → 100% | 0d → none |
| 5 | **Chambers (Valve / Flowmeter / Washout) - Sewer, Potable, Irrigation** | 2025-07-03 → 2025-07-15 (+12d) | 2025-07-30 → 2025-08-05 (+6d) |  |  |
| A103050 | Material Submittal for Chambers (Valve / Flowmeter / Washout) - Sewer, Potable, Irrigation | 2025-07-03 → 2025-07-15 A (+12d) | 2025-07-21 → 2025-07-24 A (+3d) | 0% → 100% | 15d → none |
| A103060 | Material Approval for Chambers (Valve / Flowmeter / Washout) - Sewer, Potable, Irrigation | 2025-07-22 → 2025-07-23 A (+1d) | 2025-07-30 → 2025-08-05 A (+6d) | 0% → 100% | 15d → none |
| 7 | **Communication Ducts & Manholes - Telecom systems** | 2026-06-03 → 2025-07-16 (-322d) | 2026-07-01 → 2025-08-03 (-332d) |  |  |
| A103070 | Material Submittal for Communication Ducts & Manholes - Telecom systems | 2026-06-03 → 2025-07-16 A (-322d) | 2026-06-22 → 2025-07-21 A (-336d) | 0% → 100% | 43d → none |
| A103080 | Material Approval for Communication Ducts & Manholes - Telecom systems | 2026-06-22 → 2025-07-23 A (-334d) | 2026-07-01 → 2025-08-03 A (-332d) | 0% → 100% | 43d → none |
| 19 | **Air Vents / Washout Assemblies - Water networks** | 2025-07-03 → 2025-07-17 (+14d) | 2025-08-14 → 2025-10-02 (+49d) |  |  |
| A103090 | Material Submittal for Air Vents / Washout Assemblies - Water networks | 2025-07-03 → 2025-07-17 A (+14d) | 2025-07-31 → 2025-08-03 A (+3d) | 0% → 100% | 8d → none |
| A103100 | Material Approval for Air Vents / Washout Assemblies - Water networks | 2025-08-03 A | 2025-08-14 → 2025-10-02 A (+49d) | 0% → 100% | 8d → none |
| 14 | **Warning Tapes, Marker Posts - All underground works** | 2025-07-03 → 2025-09-01 (+60d) | 2025-07-30 → 2025-09-01 (+33d) |  |  |
| A103110 | Material Submittal for Warning Tapes, Marker Posts - All underground works | 2025-07-03 → 2025-09-01 A (+60d) | 2025-07-21 → 2025-09-01 A (+42d) | 0% → 100% | 22d → none |
| A103120 | Material Approval for Warning Tapes, Marker Posts - All underground works | 2025-07-22 → 2025-09-01 A (+41d) | 2025-07-30 → 2025-09-01 A (+33d) | 0% → 100% | 22d → none |
| 17 | **Concrete (for culverts, pads, plinths) - Structural support works** | 2025-07-03 → 2025-07-27 (+24d) | 2025-08-14 → 2025-08-07 (-7d) |  |  |
| A103130 | Material Submittal for Concrete (for culverts, pads, plinths) - Structural support works | 2025-07-03 → 2025-07-27 A (+24d) | 2025-07-31 A | 0% → 100% | 5d → none |
| A103140 | Material Approval for Concrete (for culverts, pads, plinths) - Structural support works | 2025-08-03 → 2025-08-02 A (-1d) | 2025-08-14 → 2025-08-07 A (-7d) | 0% → 100% | 5d → none |
| 18 | **Steel (Rebar, Gratings, Ladders, Covers) - Structural & drainage items** | 2025-07-03 → 2025-07-05 (+2d) | 2025-07-30 → 2025-07-16 (-14d) |  |  |
| A103150 | Material Submittal for Steel (Rebar, Gratings, Ladders, Covers) - Structural & drainage items | 2025-07-03 → 2025-07-05 A (+2d) | 2025-07-21 → 2025-07-12 A (-9d) | 0% → 100% | 35d → none |
| A103160 | Material Approval for Steel (Rebar, Gratings, Ladders, Covers) - Structural & drainage items | 2025-07-22 → 2025-07-13 A (-9d) | 2025-07-30 → 2025-07-16 A (-14d) | 0% → 100% | 35d → none |
| 15 | **Interlock Tiles / Curbstone - Roads, Sidewalks, Landscape** |  | 2026-03-03 → 2026-10-13 (+224d) |  |  |
| A103170 | Material Submittal for Interlock Tiles / Curbstone - Roads, Sidewalks, Landscape | 2026-02-01 A | 2026-02-18 → 2026-02-20 A (+2d) | 0% → 100% | 95.8d → none |
| A103180 | Material Approval for Interlock Tiles / Curbstone - Roads, Sidewalks, Landscape | 2026-02-18 → 2026-02-21 A (+3d) | 2026-03-03 → 2026-10-13 (+224d) | 0% → 50% | 95.8d → 11.73d |
| 16 | **Landscaping Materials (Soil, Plants) - Final works, softscape** | 2026-02-01 → 2025-08-13 (-172d) | 2026-03-03 → 2026-10-14 (+225d) |  |  |
| A103190 | Material Submittal for Landscaping Materials (Soil, Plants) - Final works, softscape | 2026-02-01 → 2025-08-13 A (-172d) | 2026-02-18 → 2025-08-13 A (-189d) | 0% → 100% | 57.8d → none |
| A103200 | Material Approval for Landscaping Materials (Soil, Plants) - Final works, softscape | 2026-02-18 → 2026-04-01 A (+42d) | 2026-03-03 → 2026-10-14 (+225d) | 0% → 30% | 57.8d → -95.3d |
| 3 | **Procurement** |  | 2027-01-25 → 2027-02-01 (+7d) |  |  |
| 1 | **Prequalification** |  | 2026-10-11 → 2026-10-07 (-4d) |  |  |
| 20 | **Long Lead Items** |  | 2026-01-21 → 2025-12-26 (-26d) |  |  |
| 8 | **Pipes (DI / GRP) - For potable, irrigation, sewer, storm** |  | 2025-07-02 → 2025-06-24 (-8d) |  |  |
| A1138 | Prequalification Submittal for Pipes (DI / GRP) - For potable, irrigation, sewer, storm | 2025-05-19 A | 2025-06-21 → 2025-06-18 A (-3d) | 0% → 100% | 0.1d → none |
| A1139 | Prequalification Approval for Pipes (DI / GRP) - For potable, irrigation, sewer, storm | 2025-06-22 → 2025-06-18 A (-4d) | 2025-07-02 → 2025-06-24 A (-8d) | 0% → 100% | 0.1d → none |
| 2 | **Drainage Channel Covers (GRP / DI) - For storm and wastewater** |  | 2025-07-02 → 2025-06-24 (-8d) |  |  |
| A103210 | Prequalification Submittal for Drainage Channel Covers (GRP / DI) - For storm and wastewater | 2025-05-19 A | 2025-06-21 → 2025-06-18 A (-3d) | 0% → 100% | 2d → none |
| A103220 | Prequalification Approval for Drainage Channel Covers (GRP / DI) - For storm and wastewater | 2025-06-22 → 2025-06-18 A (-4d) | 2025-07-02 → 2025-06-24 A (-8d) | 0% → 100% | 2d → none |
| 4 | **Manholes (Precast / Cast in situ) - All networks** |  | 2025-07-02 → 2025-07-30 (+28d) |  |  |
| A103230 | Prequalification Submittal for Manholes (Precast / Cast in situ) - All networks | 2025-05-19 A | 2025-06-21 → 2025-07-23 A (+32d) | 0% → 100% | 0d → none |
| A103240 | Prequalification Approval for Manholes (Precast / Cast in situ) - All networks | 2025-06-22 A | 2025-07-02 → 2025-07-30 A (+28d) | 0% → 100% | 0d → none |
| 3 | **Control & Instrumentation Devices - Flow meters, pressure sensors** |  | 2025-07-02 → 2025-07-30 (+28d) |  |  |
| A103250 | Prequalification Submittal for Control & Instrumentation Devices - Flow meters, pressure sensors | 2025-05-19 A | 2025-06-21 → 2025-07-23 A (+32d) | 0% → 100% | 2d → none |
| A103260 | Prequalification Approval for Control & Instrumentation Devices - Flow meters, pressure sensors | 2025-06-22 A | 2025-07-02 → 2025-07-30 A (+28d) | 0% → 100% | 2d → none |

| ID | Task | Start | Finish | Complete | Total float |
| --- | --- | --- | --- | --- | --- |
| 10 | **Pumps (Sewage, Irrigation, Booster) - Especially for pumping stations** | 2025-05-19 → 2025-10-18 (+152d) | 2025-07-02 → 2025-10-19 (+109d) |  |  |
| A103280 | Prequalification Approval for Pumps (Sewage, Irrigation, Booster) - Especially for pumping stations | 2025-06-22 → 2025-10-18 A (+118d) | 2025-07-02 → 2025-10-19 A (+109d) | 0% → 100% | 0d → none |
| A103270 | Prequalification Submittal for Pumps (Sewage, Irrigation, Booster) - Especially for pumping stations | 2025-05-19 → 2025-10-18 A (+152d) | 2025-06-21 → 2025-10-19 A (+120d) | 0% → 100% | 0d → none |
| 6 | **Lighting Poles & Fixtures - External works, Roads, PS** |  | 2025-07-02 → 2025-08-02 (+31d) |  |  |
| A103290 | Prequalification Submittal for Lighting Poles & Fixtures - External works, Roads, PS | 2025-05-19 A | 2025-06-21 → 2025-07-24 A (+33d) | 0% → 100% | 0d → none |
| A103300 | Prequalification Approval for Lighting Poles & Fixtures - External works, Roads, PS | 2025-06-22 A | 2025-07-02 → 2025-08-02 A (+31d) | 0% → 100% | 0d → none |
| 13 | **Generators & Fuel Tanks - PS & Control Bldg backup power** |  | 2025-07-02 → 2025-08-02 (+31d) |  |  |
| A103310 | Prequalification Submittal for Generators & Fuel Tanks - PS & Control Bldg backup power | 2025-05-19 A | 2025-06-21 → 2025-07-30 A (+39d) | 0% → 100% | 0d → none |
| A103320 | Prequalification Approval for Generators & Fuel Tanks - PS & Control Bldg backup power | 2025-06-22 A | 2025-07-02 → 2025-08-02 A (+31d) | 0% → 100% | 0d → none |
| 12 | **Cable Trays / Electrical Panels (MCC) - PS and Control Buildings** | 2025-12-14 → 2025-09-26 (-79d) | 2026-01-21 → 2025-12-26 (-26d) |  |  |
| A103340 | Prequalification Approval for Cable Trays / Electrical Panels (MCC) - PS and Control Buildings | 2026-01-11 → 2025-09-26 A (-107d) | 2026-01-21 → 2025-09-30 A (-113d) | 0% → 100% | 37.8d → none |
| A103330 | Prequalification Submittal for Cable Trays / Electrical Panels (MCC) - PS and Control Buildings | 2025-12-14 → 2025-12-02 A (-12d) | 2026-01-10 → 2025-12-26 A (-15d) | 0% → 100% | 37.8d → none |
| 11 | **Odor Control Units - Sewer PS-specific** | 2025-10-09 → 2025-08-05 (-65d) | 2025-11-13 → 2025-09-09 (-65d) |  |  |
| A103350 | Prequalification Submittal for Odor Control Units - Sewer PS-specific | 2025-10-09 → 2025-08-05 A (-65d) | 2025-11-02 → 2025-08-28 A (-66d) | 0% → 100% | 1d → none |
| A103360 | Prequalification Approval for Odor Control Units - Sewer PS-specific | 2025-11-03 → 2025-08-29 A (-66d) | 2025-11-13 → 2025-09-09 A (-65d) | 0% → 100% | 1d → none |
| 21 | **Short Lead Items** |  | 2026-10-11 → 2026-10-07 (-4d) |  |  |
| 1 | **Asphalt** | 2026-08-31 → 2025-07-17 (-410d) | 2026-10-11 → 2025-09-09 (-397d) |  |  |
| A103370 | Prequalification Submittal for Asphalt | 2026-08-31 → 2025-07-17 A (-410d) | 2026-09-29 → 2025-07-17 A (-439d) | 0% → 100% | 20d → none |
| A103380 | Prequalification Approval for Asphalt | 2026-09-29 → 2025-08-28 A (-397d) | 2026-10-11 → 2025-09-09 A (-397d) | 0% → 100% | 20d → none |
| 8 | **Pipes (HDPE / uPVC) - For potable, irrigation, sewer, storm** |  | 2025-07-02 → 2025-06-24 (-8d) |  |  |
| A103390 | Prequalification Submittal for Pipes (HDPE / uPVC) - For potable, irrigation, sewer, storm | 2025-05-19 A | 2025-06-21 → 2025-06-18 A (-3d) | 0% → 100% | 14d → none |
| A103400 | Prequalification Approval for Pipes (HDPE / uPVC) - For potable, irrigation, sewer, storm | 2025-06-22 A | 2025-07-02 → 2025-06-24 A (-8d) | 0% → 100% | 14d → none |
| 9 | **Valves (Gate, Air, NRV, Flow Control) - All water & drainage systems** |  | 2025-07-02 → 2025-08-03 (+32d) |  |  |
| A103410 | Prequalification Submittal for Valves (Gate, Air, NRV, Flow Control) - All water & drainage systems | 2025-05-19 A | 2025-06-21 → 2025-08-03 A (+43d) | 0% → 100% | 0d → none |
| A103420 | Prequalification Approval for Valves (Gate, Air, NRV, Flow Control) - All water & drainage systems | 2025-06-22 A | 2025-07-02 → 2025-08-03 A (+32d) | 0% → 100% | 0d → none |
| 5 | **Chambers (Valve / Flowmeter / Washout) - Sewer, Potable, Irrigation** |  | 2025-07-02 → 2025-08-03 (+32d) |  |  |
| A103430 | Prequalification Submittal for Chambers (Valve / Flowmeter / Washout) - Sewer, Potable, Irrigation | 2025-05-19 A | 2025-06-21 → 2025-08-03 A (+43d) | 0% → 100% | 18d → none |
| A103440 | Prequalification Approval for Chambers (Valve / Flowmeter / Washout) - Sewer, Potable, Irrigation | 2025-06-22 A | 2025-07-02 → 2025-08-03 A (+32d) | 0% → 100% | 18d → none |
| 7 | **Communication Ducts & Manholes - Telecom systems** | 2026-04-20 → 2025-08-02 (-261d) | 2026-06-03 → 2025-08-03 (-304d) |  |  |
| A103450 | Prequalification Submittal for Communication Ducts & Manholes - Telecom systems | 2026-04-20 → 2025-08-02 A (-261d) | 2026-05-18 → 2025-08-03 A (-288d) | 0% → 100% | 52d → none |
| A103460 | Prequalification Approval for Communication Ducts & Manholes - Telecom systems | 2026-05-18 → 2025-08-02 A (-289d) | 2026-06-03 → 2025-08-03 A (-304d) | 0% → 100% | 52d → none |
| 19 | **Air Vents / Washout Assemblies - Water networks** |  | 2025-07-02 → 2025-08-03 (+32d) |  |  |
| A103470 | Prequalification Submittal for Air Vents / Washout Assemblies - Water networks | 2025-05-19 A | 2025-06-21 → 2025-08-03 A (+43d) | 0% → 100% | 10d → none |
| A103480 | Prequalification Approval for Air Vents / Washout Assemblies - Water networks | 2025-06-22 A | 2025-07-02 → 2025-08-03 A (+32d) | 0% → 100% | 10d → none |
| 14 | **Warning Tapes, Marker Posts - All underground works** | 2025-05-19 → 2025-07-18 (+60d) | 2025-07-02 → 2025-09-25 (+85d) |  |  |
| A103490 | Prequalification Submittal for Warning Tapes, Marker Posts - All underground works | 2025-05-19 → 2025-07-18 A (+60d) | 2025-06-21 → 2025-08-13 A (+53d) | 0% → 100% | 27d → none |
| A103500 | Prequalification Approval for Warning Tapes, Marker Posts - All underground works | 2025-06-22 → 2025-09-15 A (+85d) | 2025-07-02 → 2025-09-25 A (+85d) | 0% → 100% | 27d → none |
| 17 | **Concrete (for culverts, pads, plinths) - Structural support works** |  | 2025-07-02 → 2025-06-24 (-8d) |  |  |
| A103510 | Prequalification Submittal for Concrete (for culverts, pads, plinths) - Structural support works | 2025-05-19 A | 2025-06-21 → 2025-06-18 A (-3d) | 0% → 100% | 6d → none |
| A103520 | Prequalification Approval for Concrete (for culverts, pads, plinths) - Structural support works | 2025-06-22 A | 2025-07-02 → 2025-06-24 A (-8d) | 0% → 100% | 6d → none |
| 18 | **Steel (Rebar, Gratings, Ladders, Covers) - Structural & drainage items** |  | 2025-07-02 → 2025-07-14 (+12d) |  |  |
| A103530 | Prequalification Submittal for Steel (Rebar, Gratings, Ladders, Covers) - Structural & drainage items | 2025-05-19 A | 2025-06-21 → 2025-07-06 A (+15d) | 0% → 100% | 42d → none |
| A103540 | Prequalification Approval for Steel (Rebar, Gratings, Ladders, Covers) - Structural & drainage items | 2025-06-22 A | 2025-07-02 → 2025-07-14 A (+12d) | 0% → 100% | 42d → none |
| 15 | **Interlock Tiles / Curbstone - Roads, Sidewalks, Landscape** | 2025-12-22 → 2026-02-21 (+61d) | 2026-01-29 → 2026-10-07 (+251d) |  |  |
| A103550 | Prequalification Submittal for Interlock Tiles / Curbstone - Roads, Sidewalks, Landscape | 2025-12-22 → 2026-02-21 A (+61d) | 2026-01-18 → 2026-03-01 A (+42d) | 0% → 100% | 108.8d → none |
| A103560 | Prequalification Approval for Interlock Tiles / Curbstone - Roads, Sidewalks, Landscape | 2026-01-19 → 2026-05-02 A (+103d) | 2026-01-29 → 2026-10-07 (+251d) | 0% → 50% | 108.8d → 14.73d |
| 16 | **Landscaping Materials (Soil, Plants) - Final works, softscape** | 2025-12-22 → 2025-08-13 (-131d) | 2026-01-29 → 2026-10-07 (+251d) |  |  |
| A103570 | Prequalification Submittal for Landscaping Materials (Soil, Plants) - Final works, softscape | 2025-12-22 → 2025-08-13 A (-131d) | 2026-01-18 → 2025-08-13 A (-158d) | 0% → 100% | 63.8d → none |
| A103580 | Prequalification Approval for Landscaping Materials (Soil, Plants) - Final works, softscape | 2026-01-19 → 2025-08-13 A (-159d) | 2026-01-29 → 2026-10-07 (+251d) | 0% → 50% | 63.8d → -112.3d |
| 20 | **Long Lead Items** | 2025-07-19 → 2025-08-02 (+14d) | 2026-11-07 → 2026-11-30 (+23d) |  |  |
| 8 | **Pipes (DI / GRP) - For potable, irrigation, sewer, storm** | 2025-07-29 → 2025-08-02 (+4d) | 2025-11-22 → 2026-01-06 (+45d) |  |  |
| A102480 | Issue PO for Pipes (DI / GRP) - For potable, irrigation, sewer, storm | 2025-07-29 → 2025-08-02 A (+4d) | 2025-08-02 → 2025-08-05 A (+3d) | 0% → 100% | 0.1d → none |
| A102490 | Manufacturing for Pipes (DI / GRP) - For potable, irrigation, sewer, storm | 2025-08-03 → 2025-08-06 A (+3d) | 2025-09-06 → 2026-01-05 A (+121d) | 0% → 100% | 0.1d → none |
| A102550 | Custom Clearance for Pipes (DI / GRP) - For potable, irrigation, sewer, storm | 2025-09-07 → 2025-09-17 A (+10d) | 2025-09-11 → 2026-01-06 A (+117d) | 0% → 100% | 0.1d → none |
| A102500 | Delivery for Pipes (DI / GRP) - For potable, irrigation, sewer, storm | 2025-09-13 → 2025-09-20 A (+7d) | 2025-10-18 → 2026-01-05 A (+79d) | 0% → 100% | 0.1d → none |
| A102560 | Staging Time for Pipes (DI / GRP) - For potable, irrigation, sewer, storm | 2025-10-19 → 2025-09-20 A (-29d) | 2025-11-22 → 2026-01-05 A (+44d) | 0% → 100% | 308.2d → none |
| 2 | **Drainage Channel Covers (GRP / DI) - For storm and wastewater** | 2025-08-06 → 2025-11-05 (+91d) | 2026-01-04 → 2026-10-04 (+273d) |  |  |
| A1220 | Issue PO for Drainage Channel Covers (GRP / DI) - For storm and wastewater | 2025-08-06 → 2025-11-05 A (+91d) | 2025-08-10 → 2025-12-06 A (+118d) | 0% → 100% | 1d → none |
| A102570 | Custom Clearance for Drainage Channel Covers (GRP / DI) - For storm and wastewater | 2025-10-21 → 2025-11-17 A (+27d) | 2025-11-01 → 2026-10-03 (+336d) | 0% → 99% | 1d → -68.11d |
| A1230 | Manufacturing for Drainage Channel Covers (GRP / DI) - For storm and wastewater | 2025-08-11 → 2025-11-19 A (+100d) | 2025-10-20 → 2026-10-03 (+348d) | 0% → 99% | 1d → -68.11d |
| A1240 | Delivery for Drainage Channel Covers (GRP / DI) - For storm and wastewater | 2025-11-02 → 2025-11-23 A (+21d) | 2025-11-30 → 2026-10-03 (+307d) | 0% → 99% | 1d → -68.11d |
| A102580 | Staging Time for Drainage Channel Covers (GRP / DI) - For storm and wastewater | 2025-12-01 → 2026-01-01 A (+31d) | 2026-01-04 → 2026-10-04 (+273d) | 0% → 99% | 1d → -68.11d |
| 4 | **Manholes (Precast / Cast in situ) - All networks** | 2025-07-31 → 2025-09-16 (+47d) | 2025-12-17 → 2026-05-21 (+155d) |  |  |
| A1460 | Issue PO for Manholes (Precast / Cast in situ) - All networks | 2025-07-31 → 2025-09-16 A (+47d) | 2025-08-04 → 2025-09-16 A (+43d) | 0% → 100% | 0d → none |
| A1470 | Manufacturing for Manholes (Precast / Cast in situ) - All networks | 2025-08-05 → 2025-09-16 A (+42d) | 2025-09-27 → 2026-05-01 A (+216d) | 0% → 100% | 0d → none |
| A102590 | Custom Clearance for Manholes (Precast / Cast in situ) - All networks | 2025-09-28 → 2025-09-20 A (-8d) | 2025-10-08 → 2026-05-04 A (+208d) | 0% → 100% | 0d → none |
| A1480 | Delivery for Manholes (Precast / Cast in situ) - All networks | 2025-10-09 → 2025-09-21 A (-18d) | 2025-11-12 → 2026-05-16 A (+185d) | 0% → 100% | 0d → none |
| A102600 | Staging Time for Manholes (Precast / Cast in situ) - All networks | 2025-11-13 → 2025-11-11 A (-2d) | 2025-12-17 → 2026-05-21 A (+155d) | 0% → 100% | 0d → none |
| 3 | **Control & Instrumentation Devices - Flow meters, pressure sensors** | 2025-07-31 → 2025-08-24 (+24d) | 2025-12-17 → 2026-10-29 (+316d) |  |  |
| A1520 | Issue PO for Control & Instrumentation Devices - Flow meters, pressure sensors | 2025-07-31 → 2025-08-24 A (+24d) | 2025-08-04 → 2025-08-24 A (+20d) | 0% → 100% | 1d → none |

| ID | Task | Start | Finish | Duration | Complete | Total float |
| --- | --- | --- | --- | --- | --- | --- |
| A1530 | Manufacturing for Control & Instrumentation Devices - Flow meters, pressure sensors | 2025-08-05 → 2025-08-24 A (+19d) | 2025-09-27 → 2026-10-04 (+372d) |  | 0% → 96% | 1d → -39.35d |
| A102610 | Custom Clearance for Control & Instrumentation Devices - Flow meters, pressure sensors | 2025-09-28 → 2025-11-26 A (+59d) | 2025-10-02 → 2026-10-04 (+367d) |  | 0% → 96% | 1d → -39.35d |
| A1570 | Delivery for Control & Instrumentation Devices - Flow meters, pressure sensors | 2025-10-04 → 2026-04-13 A (+191d) | 2025-11-12 → 2026-10-06 (+328d) |  | 0% → 95% | 1d → -39.35d |
| A102620 | Staging Time for Control & Instrumentation Devices - Flow meters, pressure sensors | 2025-11-13 → 2026-04-16 A (+154d) | 2025-12-17 → 2026-10-29 (+316d) |  | 0% → 35% | 1d → -39.35d |
| 10 | **Pumps (Sewage, Irrigation, Booster) - Especially for pumping stations** | 2025-07-19 → 2025-10-16 (+89d) | 2025-12-16 → 2026-10-07 (+295d) |  |  |  |
| A102140 | Issue PO for Pumps (Sewage, Irrigation, Booster) - Especially for pumping stations | 2025-07-19 → 2025-10-16 A (+89d) | 2025-07-22 → 2025-10-16 A (+86d) |  | 0% → 100% | 0d → none |
| A102150 | Manufacturing for Pumps (Sewage, Irrigation, Booster) - Especially for pumping stations | 2025-07-23 → 2025-10-16 A (+85d) | 2025-09-13 → 2026-10-03 (+385d) |  | 0% → 98% | 0d → 45.3d |
| A102170 | Delivery for Pumps (Sewage, Irrigation, Booster) - Especially for pumping stations | 2025-09-20 → 2025-11-05 A (+46d) | 2025-11-11 → 2026-10-05 (+328d) |  | 0% → 96% | 0d → 45.3d |
| A102630 | Custom Clearance for Pumps (Sewage, Irrigation, Booster) - Especially for pumping stations | 2025-09-14 → 2025-11-28 A (+75d) | 2025-09-18 → 2026-10-04 (+381d) |  | 0% → 96% | 0d → 45.3d |
| A102640 | Staging Time for Pumps (Sewage, Irrigation, Booster) - Especially for pumping stations | 2025-11-12 → 2026-01-20 A (+69d) | 2025-12-16 → 2026-10-07 (+295d) |  | 0% → 96% | 0d → 45.3d |
| 6 | **Lighting Poles & Fixtures - External works, Roads, PS** | 2025-07-31 → 2025-10-10 (+71d) | 2025-12-23 → 2026-01-12 (+20d) |  |  |  |
| A1400 | Issue PO for Lighting Poles & Fixtures - External works, Roads, PS | 2025-07-31 → 2025-10-10 A (+71d) | 2025-08-04 → 2025-10-11 A (+68d) |  | 0% → 100% | 0d → none |
| A102650 | Custom Clearance for Lighting Poles & Fixtures - External works, Roads, PS | 2025-10-15 → 2025-11-27 A (+43d) | 2025-10-20 → 2025-12-14 A (+55d) |  | 0% → 100% | 0d → none |
| A1410 | Manufacturing for Lighting Poles & Fixtures - External works, Roads, PS | 2025-08-05 → 2025-11-29 A (+116d) | 2025-10-14 → 2025-12-03 A (+50d) |  | 0% → 100% | 0d → none |
| A1420 | Delivery for Lighting Poles & Fixtures - External works, Roads, PS | 2025-10-21 → 2025-11-30 A (+40d) | 2025-11-18 → 2025-12-09 A (+21d) |  | 0% → 100% | 0d → none |
| A102660 | Staging Time for Lighting Poles & Fixtures - External works, Roads, PS | 2025-11-19 → 2025-12-02 A (+13d) | 2025-12-23 → 2026-01-12 A (+20d) |  | 0% → 100% | 0d → none |
| 13 | **Generators & Fuel Tanks - PS & Control Bldg backup power** | 2025-07-31 → 2025-12-05 (+127d) | 2025-12-13 → 2026-10-26 (+317d) |  |  |  |
| A102220 | Issue PO for Generators & Fuel Tanks - PS & Control Bldg backup power | 2025-07-31 → 2025-12-05 A (+127d) | 2025-08-04 → 2025-12-10 A (+128d) |  | 0% → 100% | 0d → none |
| A102230 | Manufacturing for Generators & Fuel Tanks - PS & Control Bldg backup power | 2025-08-05 → 2025-12-08 A (+125d) | 2025-10-08 → 2026-10-11 (+368d) |  | 0% → 96% | 0d → 0.79d |
| A102250 | Delivery for Generators & Fuel Tanks - PS & Control Bldg backup power | 2025-10-15 → 2025-12-10 A (+56d) | 2025-11-08 → 2026-10-12 (+338d) |  | 0% → 94% | 0d → 0.79d |
| A102670 | Custom Clearance for Generators & Fuel Tanks - PS & Control Bldg backup power | 2025-10-09 → 2026-01-01 A (+84d) | 2025-10-14 → 2026-10-11 (+362d) |  | 0% → 93% | 0d → 0.79d |
| A102680 | Staging Time for Generators & Fuel Tanks - PS & Control Bldg backup power | 2025-11-09 → 2026-07-04 A (+237d) | 2025-12-13 → 2026-10-26 (+317d) |  | 0% → 60% | 0d → 0.79d |
| 12 | **Cable Trays / Electrical Panels (MCC) - PS and Control Buildings** | 2026-02-19 → 2025-08-24 (-179d) | 2026-11-07 → 2025-10-23 (-380d) |  |  |  |
| A102200 | Issue PO for Cable Trays / Electrical Panels (MCC) - PS and Control Buildings | 2026-02-19 → 2025-08-24 A (-179d) | 2026-03-01 → 2025-08-24 A (-189d) |  | 0% → 100% | 38.6d → none |
| A102210 | Manufacturing for Cable Trays / Electrical Panels (MCC) - PS and Control Buildings | 2026-03-01 → 2025-08-24 A (-189d) | 2026-06-30 → 2025-08-24 A (-310d) |  | 0% → 100% | 38.6d → none |
| A102690 | Custom Clearance for Cable Trays / Electrical Panels (MCC) - PS and Control Buildings | 2026-07-01 → 2025-08-24 A (-311d) | 2026-07-23 → 2025-08-24 A (-333d) |  | 0% → 100% | 38.6d → none |
| A102240 | Delivery for Cable Trays / Electrical Panels (MCC) - PS and Control Buildings | 2026-07-25 → 2025-10-10 A (-288d) | 2026-10-03 → 2025-10-11 A (-357d) |  | 0% → 100% | 38.6d → none |
| A102700 | Staging Time for Cable Trays / Electrical Panels (MCC) - PS and Control Buildings | 2026-10-04 → 2025-10-10 A (-359d) | 2026-11-07 → 2025-10-23 A (-380d) |  | 0% → 100% | 38.6d → none |
| 11 | **Odor Control Units - Sewer PS-specific** | 2025-12-14 → 2025-11-09 (-35d) | 2026-08-31 → 2026-11-30 (+91d) |  |  |  |
| A102120 | Issue PO for Odor Control Units - Sewer PS-specific | 2025-12-14 → 2025-11-09 A (-35d) | 2025-12-17 → 2025-11-30 A (-17d) |  | 0% → 100% | 0d → none |
| A102130 | Manufacturing for Odor Control Units - Sewer PS-specific | 2025-12-18 → 2026-01-01 A (+14d) | 2026-04-20 → 2026-05-04 A (+14d) |  | 0% → 100% | 0d → none |
| A102180 | Delivery for Odor Control Units - Sewer PS-specific | 2026-05-13 → 2026-04-01 A (-42d) | 2026-07-27 → 2026-05-21 A (-67d) | 60d → 50d | 0% → 100% | 0d → none |
| A102710 | Custom Clearance for Odor Control Units - Sewer PS-specific | 2026-04-20 → 2026-04-01 A (-19d) | 2026-05-13 → 2026-04-13 A (-30d) |  | 0% → 100% | 0d → none |
| A102720 | Staging Time for Odor Control Units - Sewer PS-specific | 2026-07-27 → 2026-10-26 (+91d) | 2026-08-31 → 2026-11-30 (+91d) |  |  | 0d → 0.79d |
| 21 | **Short Lead Items** | 2025-07-31 → 2025-07-25 (-6d) | 2027-01-25 → 2027-02-01 (+7d) |  |  |  |
| 1 | **Asphalt** | 2026-11-08 → 2025-11-19 (-354d) | 2027-01-25 → 2026-12-01 (-55d) |  |  |  |
| A1160 | Issue PO for Asphalt | 2026-11-08 → 2025-11-19 A (-354d) | 2026-11-12 → 2025-11-30 A (-347d) |  | 0% → 100% | 20d → none |
| A102730 | Delivery for Asphalt Phase 1 | 2026-11-12 → 2025-12-01 A (-346d) | 2026-12-07 → 2026-12-01 (-6d) |  | 0% → 99% | 20d → 35.58d |
| A103740 | Delivery for Asphalt Phase 2 | 2026-12-07 → 2025-12-08 A (-364d) | 2026-12-31 → 2026-12-01 (-30d) |  | 0% → 99% | 20d → 35.58d |
| A103750 | Delivery for Asphalt Phase 3 | 2026-12-31 → 2025-12-14 A (-382d) | 2027-01-25 → 2026-12-01 (-55d) |  | 0% → 99% | 20d → 101.66d |
| 8 | **Pipes (HDPE / uPVC) - For potable, irrigation, sewer, storm** | 2025-07-31 → 2025-08-01 (+1d) | 2025-11-06 → 2026-01-14 (+69d) |  |  |  |
| A102100 | Issue PO for Pipes (HDPE / uPVC) - For potable, irrigation, sewer, storm | 2025-07-31 → 2025-08-01 A (+1d) | 2025-08-04 → 2025-08-06 A (+2d) |  | 0% → 100% | 13.1d → none |
| A102110 | Manufacturing for Pipes (HDPE / uPVC) - For potable, irrigation, sewer, storm | 2025-08-05 → 2025-08-06 A (+1d) | 2025-09-08 → 2025-12-14 A (+97d) |  | 0% → 100% | 13.1d → none |
| A102190 | Delivery for Pipes (HDPE / uPVC) - For potable, irrigation, sewer, storm | 2025-09-09 → 2025-08-10 A (-30d) | 2025-10-02 → 2025-12-08 A (+67d) |  | 0% → 100% | 13.1d → none |
| A102740 | Staging Time for Pipes (HDPE / uPVC) - For potable, irrigation, sewer, storm | 2025-10-04 → 2026-01-01 A (+89d) | 2025-11-06 → 2026-01-14 A (+69d) |  | 0% → 100% | 20d → none |
| 9 | **Valves (Gate, Air, NRV, Flow Control) - All water & drainage systems** | 2025-07-31 → 2025-11-25 (+117d) | 2025-12-06 → 2026-04-13 (+128d) |  |  |  |
| A102080 | Issue PO for Valves (Gate, Air, NRV, Flow Control) - All water & drainage systems | 2025-07-31 → 2025-11-25 A (+117d) | 2025-08-04 → 2025-12-01 A (+119d) |  | 0% → 100% | 0d → none |
| A102090 | Manufacturing for Valves (Gate, Air, NRV, Flow Control) - All water & drainage systems | 2025-08-05 → 2025-11-26 A (+113d) | 2025-10-14 → 2026-03-01 A (+138d) |  | 0% → 100% | 0d → none |
| A102160 | Delivery for Valves (Gate, Air, NRV, Flow Control) - All water & drainage systems | 2025-10-15 → 2025-12-01 A (+47d) | 2025-11-01 → 2026-03-30 A (+149d) |  | 0% → 100% | 0d → none |
| A102750 | Staging Time for Valves (Gate, Air, NRV, Flow Control) - All water & drainage systems | 2025-11-02 → 2026-02-01 A (+91d) | 2025-12-06 → 2026-04-13 A (+128d) |  | 0% → 100% | 0d → none |
| 5 | **Chambers (Valve / Flowmeter / Washout) - Sewer, Potable, Irrigation** | 2025-07-31 → 2025-11-10 (+102d) | 2025-11-18 → 2026-03-31 (+133d) |  |  |  |
| A101970 | Issue PO for Chambers (Valve / Flowmeter / Washout) - Sewer, Potable, Irrigation | 2025-07-31 → 2025-11-10 A (+102d) | 2025-08-04 → 2025-11-14 A (+102d) |  | 0% → 100% | 18d → none |
| A101980 | Manufacturing for Chambers (Valve / Flowmeter / Washout) - Sewer, Potable, Irrigation | 2025-08-05 → 2025-11-17 A (+104d) | 2025-09-08 → 2026-02-01 A (+146d) |  | 0% → 100% | 18d → none |
| A102030 | Delivery for Chambers (Valve / Flowmeter / Washout) - Sewer, Potable, Irrigation | 2025-09-09 → 2025-11-24 A (+76d) | 2025-10-14 → 2026-03-02 A (+139d) |  | 0% → 100% | 18d → none |
| A102760 | Staging Time for Chambers (Valve / Flowmeter / Washout) - Sewer, Potable, Irrigation | 2025-10-15 → 2026-01-01 A (+78d) | 2025-11-18 → 2026-03-31 A (+133d) |  | 0% → 100% | 18d → none |
| 7 | **Communication Ducts & Manholes - Telecom systems** | 2026-08-31 → 2025-08-24 (-372d) | 2027-01-06 → 2027-01-16 (+10d) |  |  |  |
| A101990 | Issue PO for Communication Ducts & Manholes - Telecom systems | 2026-08-31 → 2025-08-24 A (-372d) | 2026-09-05 → 2025-08-31 A (-370d) |  | 0% → 100% | 0d → none |
| A102000 | Manufacturing for Communication Ducts & Manholes - Telecom systems | 2026-09-05 → 2025-08-24 A (-377d) | 2026-10-28 → 2026-01-10 A (-291d) |  | 0% → 100% | 0d → none |
| A102050 | Delivery for Communication Ducts & Manholes - Telecom systems | 2026-10-28 → 2025-11-24 A (-338d) | 2026-12-02 → 2027-01-16 A (+45d) |  | 0% → 100% | 0d → none |
| A102770 | Staging Time for Communication Ducts & Manholes - Telecom systems | 2026-12-02 → 2026-12-01 A (-1d) | 2027-01-06 → 2026-12-22 A (-15d) |  | 0% → 100% | 0d → none |
| 19 | **Air Vents / Washout Assemblies - Water networks** | 2025-08-16 → 2025-12-13 (+119d) | 2025-12-21 → 2026-05-12 (+142d) |  |  |  |
| A102410 | Issue PO for Air Vents / Washout Assemblies - Water networks | 2025-08-16 → 2025-12-13 A (+119d) | 2025-08-19 → 2025-12-14 A (+117d) |  | 0% → 100% | 10d → none |
| A102420 | Manufacturing for Air Vents / Washout Assemblies - Water networks | 2025-08-20 → 2025-12-15 A (+117d) | 2025-10-12 → 2026-04-01 A (+171d) |  | 0% → 100% | 10d → none |
| A102460 | Delivery for Air Vents / Washout Assemblies - Water networks | 2025-10-13 → 2026-01-01 A (+80d) | 2025-11-16 → 2026-05-02 A (+167d) |  | 0% → 100% | 10d → none |
| A102780 | Staging Time for Air Vents / Washout Assemblies - Water networks | 2025-11-17 → 2026-02-01 A (+76d) | 2025-12-21 → 2026-05-12 A (+142d) |  | 0% → 100% | 10d → none |
| 14 | **Warning Tapes, Marker Posts - All underground works** | 2025-07-31 → 2025-09-30 (+61d) | 2025-10-26 → 2025-12-15 (+50d) |  |  |  |
| A102260 | Issue PO for Warning Tapes, Marker Posts - All underground works | 2025-07-31 → 2025-09-30 A (+61d) | 2025-08-04 → 2025-09-30 A (+57d) |  | 0% → 100% | 27d → none |
| A102270 | Manufacturing for Warning Tapes, Marker Posts - All underground works | 2025-08-05 → 2025-09-30 A (+56d) | 2025-08-26 → 2025-09-30 A (+35d) |  | 0% → 100% | 27d → none |
| A102320 | Delivery for Warning Tapes, Marker Posts - All underground works | 2025-08-27 → 2025-09-30 A (+34d) | 2025-09-20 → 2025-10-04 A (+14d) |  | 0% → 100% | 27d → none |
| A102790 | Staging Time for Warning Tapes, Marker Posts - All underground works | 2025-09-21 → 2025-12-13 A (+83d) | 2025-10-26 → 2025-12-15 A (+50d) |  | 0% → 100% | 27d → none |

| ID | Task | Start | Finish | Complete | Total float |
| --- | --- | --- | --- | --- | --- |
| 17 | **Concrete (for culverts, pads, plinths) - Structural support works** | 2025-08-16 → 2025-07-30 (-17d) | 2026-11-08 → 2026-06-15 (-146d) |  |  |
| A102280 | Issue PO for Concrete (for culverts, pads, plinths) - Structural support works | 2025-08-16 → 2025-07-30 A (-17d) | 2025-08-19 → 2025-07-30 A (-20d) | 0% → 100% | 7d → none |
| A102340 | Delivery for Concrete (for culverts, pads, plinths) - Structural support works P1 | 2025-08-20 → 2025-11-25 A (+97d) | 2025-09-24 → 2025-12-06 A (+73d) | 0% → 100% | 7d → none |
| A103760 | Delivery for Concrete (for culverts, pads, plinths) - Structural support works P2 | 2025-09-25 → 2025-12-03 A (+69d) | 2025-10-29 → 2025-12-11 A (+43d) | 0% → 100% | 7d → none |
| A103770 | Delivery for Concrete (for culverts, pads, plinths) - Structural support works P3 | 2025-10-30 → 2025-12-09 A (+40d) | 2025-12-03 → 2025-12-10 A (+7d) | 0% → 100% | 7d → none |
| A103780 | Delivery for Concrete (for culverts, pads, plinths) - Structural support works P4 | 2025-12-04 → 2025-12-15 A (+11d) | 2026-01-07 → 2026-01-01 A (-6d) | 0% → 100% | 97d → none |
| A103790 | Delivery for Concrete (for culverts, pads, plinths) - Structural support works P5 | 2026-01-08 → 2026-01-01 A (-7d) | 2026-02-11 → 2026-01-08 A (-34d) | 0% → 100% | 97d → none |
| A103800 | Delivery for Concrete (for culverts, pads, plinths) - Structural support works P6 | 2026-02-12 → 2026-01-17 A (-26d) | 2026-04-06 → 2026-01-22 A (-74d) | 0% → 100% | 97d → none |
| A103810 | Delivery for Concrete (for culverts, pads, plinths) - Structural support works P7 | 2026-04-06 → 2026-01-17 A (-79d) | 2026-05-11 → 2026-01-29 A (-102d) | 0% → 100% | 97d → none |
| A103820 | Delivery for Concrete (for culverts, pads, plinths) - Structural support works P8 | 2026-05-11 → 2026-02-01 A (-99d) | 2026-06-20 → 2026-02-12 A (-128d) | 0% → 100% | 97d → none |
| A103830 | Delivery for Concrete (for culverts, pads, plinths) - Structural support works P9 | 2026-06-20 → 2026-03-01 A (-111d) | 2026-07-25 → 2026-03-31 A (-116d) | 0% → 100% | 97d → none |
| A103840 | Delivery for Concrete (for culverts, pads, plinths) - Structural support works P10 | 2026-07-25 → 2026-03-31 A (-116d) | 2026-08-29 → 2026-04-21 A (-130d) | 0% → 100% | 97d → none |
| A103850 | Delivery for Concrete (for culverts, pads, plinths) - Structural support works P11 | 2026-08-29 → 2026-04-01 A (-150d) | 2026-10-04 → 2026-04-14 A (-173d) | 0% → 100% | 97d → none |
| A103860 | Delivery for Concrete (for culverts, pads, plinths) - Structural support works P12 | 2026-10-04 → 2026-05-01 A (-156d) | 2026-11-08 → 2026-06-15 A (-146d) | 0% → 100% | 97d → none |
| 18 | **Steel (Rebar, Gratings, Ladders, Covers) - Structural & drainage items** | 2025-07-31 → 2025-07-25 (-6d) | 2025-10-12 → 2026-06-17 (+248d) |  |  |
| A102300 | Issue PO for Steel (Rebar, Gratings, Ladders, Covers) - Structural & drainage items | 2025-07-31 → 2025-07-25 A (-6d) | 2025-08-04 → 2025-07-25 A (-10d) | 0% → 100% | 42d → none |
| A102310 | Manufacturing for Steel (Rebar, Gratings, Ladders, Covers) - Structural & drainage items | 2025-08-05 → 2025-07-25 A (-11d) | 2025-08-28 → 2026-05-20 A (+265d) | 0% → 100% | 42d → none |
| A102330 | Delivery for Steel (Rebar, Gratings, Ladders, Covers) - Structural & drainage items | 2025-08-30 → 2025-08-10 A (-20d) | 2025-09-06 → 2026-06-13 A (+280d) | 0% → 100% | 42d → none |
| A102810 | Staging Time for Steel (Rebar, Gratings, Ladders, Covers) - Structural & drainage items | 2025-09-07 → 2025-11-12 A (+66d) | 2025-10-12 → 2026-06-17 A (+248d) | 0% → 100% | 42d → none |
| 15 | **Interlock Tiles / Curbstone - Roads, Sidewalks, Landscape** | 2026-03-03 → 2025-11-03 (-120d) | 2026-07-07 → 2026-11-02 (+118d) |  |  |
| A102370 | Issue PO for Interlock Tiles / Curbstone - Roads, Sidewalks, Landscape | 2026-03-03 → 2025-11-03 A (-120d) | 2026-03-10 → 2025-11-14 A (-116d) | 0% → 100% | 111.4d → none |
| A102380 | Manufacturing for Interlock Tiles / Curbstone - Roads, Sidewalks, Landscape | 2026-03-11 → 2026-01-01 A (-69d) | 2026-04-23 → 2026-10-13 (+173d) | 0% → 99% | 111.4d → 13.73d |
| A102400 | Delivery for Interlock Tiles / Curbstone - Roads, Sidewalks, Landscape | 2026-04-23 → 2026-04-01 A (-22d) | 2026-06-02 → 2026-10-14 (+134d) | 0% → 99% | 111.4d → 13.73d |
| A102820 | Staging Time for Interlock Tiles / Curbstone - Roads, Sidewalks, Landscape | 2026-06-02 → 2026-07-04 A (+32d) | 2026-07-07 → 2026-11-02 (+118d) | 0% → 45% | 111.4d → 13.73d |
| 16 | **Landscaping Materials (Soil, Plants) - Final works, softscape** | 2026-03-03 → 2026-10-14 (+225d) | 2026-07-07 → 2027-02-01 (+209d) |  |  |
| A102350 | Issue PO for Landscaping Materials (Soil, Plants) - Final works, softscape | 2026-03-03 → 2026-10-14 (+225d) | 2026-03-10 → 2026-10-19 (+223d) |  | 65.4d → -113.3d |
| A102360 | Manufacturing for Landscaping Materials (Soil, Plants) - Final works, softscape | 2026-03-11 → 2026-10-19 (+222d) | 2026-06-02 → 2026-12-28 (+209d) |  | 65.4d → -113.3d |
| A102390 | Delivery for Landscaping Materials (Soil, Plants) - Final works, softscape | 2026-06-02 → 2026-12-28 (+209d) | 2026-07-07 → 2027-02-01 (+209d) |  | 65.4d → -113.3d |
| 4 | **Construction** |  | 2027-05-18 → 2027-10-19 (+154d) |  |  |
| 7 | **Zone 3** | 2025-10-13 → 2025-09-15 (-28d) | 2026-12-26 → 2027-06-30 (+186d) |  |  |
| 2 | **Sewerage Network Zone 3** | 2025-10-13 → 2026-01-01 (+80d) | 2026-12-26 → 2027-04-17 (+112d) |  |  |
| 3 | **Pipework: Supply, Installation, and Testing** | 2025-10-19 → 2026-01-01 (+74d) | 2026-01-27 → 2026-10-26 (+272d) |  |  |
| 1 | **UPVC Pipes Installation (150mm–315mm)** | 2025-10-19 → 2026-04-01 (+164d) | 2026-01-12 → 2026-05-09 (+117d) |  |  |
| MOD-SWN-PW-305 | Excavation and Trenching UPVC for Sewerage Network Zone 3 | 2025-10-19 → 2026-04-01 A (+164d) | 2025-11-08 → 2026-05-01 A (+174d) | 0% → 100% | 424.6d → none |
| MOD-SWN-PW-315 | Lean Concrete / Bedding UPVC for Sewerage Network Zone 3 | 2025-11-09 → 2026-04-02 A (+144d) | 2025-11-15 → 2026-05-02 A (+168d) | 0% → 100% | 424.6d → none |
| MOD-SWN-PW-265 | UPVC Pipes Installation (150mm–315mm) UPVC for Sewerage Network Zone 3 | 2025-11-16 → 2026-04-04 A (+139d) | 2025-11-28 → 2026-05-03 A (+156d) | 0% → 100% | 424.6d → none |
| MOD-SWN-PW-325 | Test (Pressure - Slope) UPVC for Sewerage Network Zone 3 | 2025-11-29 → 2026-04-05 A (+127d) | 2025-12-13 → 2026-05-05 A (+143d) | 0% → 100% | 438d → none |
| MOD-SWN-PW-335 | Coating / Wrapping UPVC for Sewerage Network Zone 3 | 2025-12-14 → 2026-04-08 A (+115d) | 2025-12-28 → 2026-05-07 A (+130d) | 0% → 100% | 438d → none |
| MOD-SWN-PW-295 | Backfilling & Warrning Tape UPVC for Sewerage Network Zone 3 | 2025-12-29 → 2026-04-10 A (+102d) | 2026-01-12 → 2026-05-09 A (+117d) | 0% → 100% | 438d → none |
| 2 | **GRP Pipes Installation (400mm–700mm)** | 2025-10-19 → 2026-04-16 (+179d) | 2026-01-27 → 2026-05-23 (+116d) |  |  |
| MOD-SWN-PW-355 | Excavation and Trenching GRP for Sewerage Network Zone 3 | 2025-10-19 → 2026-04-16 A (+179d) | 2025-11-08 → 2026-05-14 A (+187d) | 0% → 100% | 424.6d → none |
| MOD-SWN-PW-365 | Lean Concrete / Bedding GRP for Sewerage Network Zone 3 | 2025-11-09 → 2026-04-18 A (+160d) | 2025-11-15 → 2026-05-18 A (+184d) | 0% → 100% | 424.6d → none |
| MOD-SWN-PW-275 | GRP Pipes Installation (400mm–700mm) GRP for Sewerage Network Zone 3 | 2025-11-23 → 2026-04-19 A (+147d) | 2025-12-13 → 2026-05-19 A (+157d) | 0% → 100% | 417.6d → none |
| MOD-SWN-PW-375 | Test (Pressure - Slope) GRP for Sewerage Network Zone 3 | 2025-12-14 → 2026-04-20 A (+127d) | 2025-12-28 → 2026-05-20 A (+143d) | 0% → 100% | 423d → none |
| MOD-SWN-PW-385 | Coating / Wrapping GRP for Sewerage Network Zone 3 | 2025-12-29 → 2026-04-22 A (+114d) | 2026-01-12 → 2026-05-21 A (+129d) | 0% → 100% | 423d → none |
| MOD-SWN-PW-345 | Backfilling & Warrning Tape GRP for Sewerage Network Zone 3 | 2026-01-13 → 2026-04-25 A (+102d) | 2026-01-27 → 2026-05-23 A (+116d) | 0% → 100% | 423d → none |
| 3 | **HDPE Pressure Pipes Installation (250mm–630mm)** | 2025-10-19 → 2026-01-01 (+74d) | 2026-01-27 → 2026-10-26 (+272d) |  |  |
| MOD-SWN-PW-405 | Excavation and Trenching HDPE for Sewerage Network Zone 3 | 2025-10-19 → 2026-01-01 A (+74d) | 2025-11-08 → 2026-04-02 A (+145d) | 0% → 100% | 424.6d → none |
| MOD-SWN-PW-415 | Lean Concrete / Bedding HDPE for Sewerage Network Zone 3 | 2025-11-09 → 2026-02-01 A (+84d) | 2025-11-15 → 2026-04-11 A (+147d) | 0% → 100% | 424.6d → none |
| MOD-SWN-PW-285 | HDPE Pressure Pipes Installation (250mm–630mm) HDPE for Sewerage Network Zone 3 | 2025-11-23 → 2026-02-10 A (+79d) | 2025-12-13 → 2026-04-20 A (+128d) | 0% → 100% | 417.6d → none |
| MOD-SWN-PW-425 | Test (Pressure - Slope) HDPE for Sewerage Network Zone 3 | 2025-12-14 → 2026-02-23 A (+71d) | 2025-12-28 → 2026-10-05 (+281d) | 0% → 80% | 423d → 145.8d |
| MOD-SWN-PW-435 | Coating / Wrapping HDPE for Sewerage Network Zone 3 | 2025-12-29 → 2026-03-01 A (+62d) | 2026-01-12 → 2026-10-11 (+272d) | 0% → 60% | 423d → 145.8d |
| MOD-SWN-PW-395 | Backfilling & Warrning Tape HDPE for Sewerage Network Zone 3 | 2026-01-13 → 2026-10-12 (+272d) | 2026-01-27 → 2026-10-26 (+272d) |  | 423d → 145.8d |
| 4 | **Fittings and Valves** | 2025-12-14 → 2026-10-03 (+293d) | 2026-01-13 → 2026-11-02 (+293d) |  |  |
| MOD-SWN-FV-55 | Supply & Installation of HDPE Elbows for Sewerage Network Zone 3 | 2025-12-14 → 2026-10-03 (+293d) | 2025-12-20 → 2026-10-08 (+292d) |  | 337.8d → 103.4d |
| MOD-SWN-FV-65 | Gate Valves Installation for Sewerage Network Zone 3 | 2025-12-21 → 2026-10-10 (+293d) | 2025-12-24 → 2026-10-13 (+293d) |  | 337.8d → 103.4d |
| MOD-SWN-FV-75 | Drain Valves Installation for Sewerage Network Zone 3 | 2025-12-25 → 2026-10-14 (+293d) | 2025-12-29 → 2026-10-18 (+293d) |  | 337.8d → 103.4d |
| MOD-SWN-FV-85 | Air Breather & Air Release Valves Installation for Sewerage Network Zone 3 | 2025-12-30 → 2026-10-19 (+293d) | 2026-01-10 → 2026-10-29 (+292d) |  | 337.8d → 103.4d |
| MOD-SWN-FV-95 | Jointing & Piping Accessories Installation for Sewerage Network Zone 3 | 2026-01-11 → 2026-10-31 (+293d) | 2026-01-13 → 2026-11-02 (+293d) |  | 337.8d → 103.4d |
| 6 | **Valve & Flow Meter Chambers** | 2025-10-19 → 2026-06-08 (+232d) | 2026-02-10 → 2026-12-14 (+307d) |  |  |
| 1 | **Valve Chambers Construction** | 2025-10-19 → 2026-06-08 (+232d) | 2026-01-04 → 2026-11-16 (+316d) |  |  |
| MOD-SWN-PW-815 | Excavation Valve Chamber for Sewerage Network Zone 3 | 2025-10-19 → 2026-06-08 A (+232d) | 2025-11-08 → 2026-10-11 (+337d) | 0% → 60% | 409d → 96.9d |
| MOD-SWN-PW-825 | Lean Concrete / Bedding Valve Chamber for Sewerage Network Zone 3 | 2025-11-09 → 2026-07-22 A (+255d) | 2025-11-29 → 2026-10-21 (+326d) | 0% → 50% | 409d → 96.9d |
| MOD-SWN-VF-84 | Valve Chambers Construction Valve Chamber for Sewerage Network Zone 3 | 2025-11-30 → 2026-07-31 A (+243d) | 2025-12-05 → 2026-10-24 (+323d) | 0% → 50% | 409d → 96.9d |
| MOD-SWN-PW-835 | Test Valve Chamber for Sewerage Network Zone 3 | 2025-12-06 → 2026-08-04 A (+241d) | 2025-12-20 → 2026-11-01 (+316d) | 0% → 50% | 446d → 125.4d |
| MOD-SWN-PW-805 | Backfilling Valve Chamber for Sewerage Network Zone 3 | 2025-12-21 → 2026-11-01 (+315d) | 2026-01-04 → 2026-11-16 (+316d) |  | 446d → 125.4d |
| 2 | **Water Drain Chambers Construction** | 2025-10-19 → 2026-06-16 (+240d) | 2026-01-23 → 2026-12-03 (+314d) |  |  |
| MOD-SWN-PW-855 | Excavation Water Drain Chamber for Sewerage Network Zone 3 | 2025-10-19 → 2026-06-16 A (+240d) | 2025-11-08 → 2026-10-09 (+335d) | 0% → 70% | 415d → 104.1d |
| MOD-SWN-PW-865 | Lean Concrete / Bedding Water Drain Chamber for Sewerage Network Zone 3 | 2025-11-09 → 2026-06-23 A (+226d) | 2025-11-29 → 2026-10-17 (+322d) | 0% → 60% | 415d → 104.1d |
| MOD-SWN-VF-94 | Water Drain Chambers Construction Water Drain Chamber for Sewerage Network Zone 3 | 2025-12-06 → 2026-07-01 A (+207d) | 2025-12-24 → 2026-11-03 (+314d) | 0% → 50% | 409d → 96.9d |

| ID | Task | Start | Finish | Complete | Total float |
| --- | --- | --- | --- | --- | --- |
| MOD-SWN-PW-875 | Test Water Drain Chamber for Sewerage Network Zone 3 | 2025-12-25 → 2026-11-03 (+313d) | 2026-01-08 → 2026-11-18 (+314d) |  | 427d → 108.4d |
| MOD-SWN-PW-845 | Backfilling Water Drain Chamber for Sewerage Network Zone 3 | 2026-01-09 → 2026-11-18 (+313d) | 2026-01-23 → 2026-12-03 (+314d) |  | 427d → 108.4d |
| 3 | **Discharge Chambers Construction** | 2025-10-19 → 2026-07-01 (+255d) | 2026-02-05 → 2026-12-09 (+307d) |  |  |
| MOD-SWN-PW-895 | Excavation Discharge Chamber for Sewerage Network Zone 3 | 2025-10-19 → 2026-07-01 A (+255d) | 2025-11-08 → 2026-10-11 (+337d) | 0% → 60% | 434d → 109.4d |
| MOD-SWN-PW-905 | Lean Concrete / Bedding Discharge Chamber for Sewerage Network Zone 3 | 2025-11-09 → 2026-07-15 A (+248d) | 2025-11-29 → 2026-10-21 (+326d) | 0% → 50% | 434d → 109.4d |
| MOD-SWN-VF-104 | Discharge Chambers Construction Discharge Chamber for Sewerage Network Zone 3 | 2025-12-25 → 2026-08-01 A (+219d) | 2026-01-06 → 2026-11-09 (+307d) | 0% → 50% | 409d → 96.9d |
| MOD-SWN-PW-915 | Test Discharge Chamber for Sewerage Network Zone 3 | 2026-01-07 → 2026-11-09 (+306d) | 2026-01-21 → 2026-11-24 (+307d) |  | 414d → 101.9d |
| MOD-SWN-PW-885 | Backfilling Discharge Chamber for Sewerage Network Zone 3 | 2026-01-22 → 2026-11-24 (+306d) | 2026-02-05 → 2026-12-09 (+307d) |  | 414d → 101.9d |
| 4 | **Flow Meter Chambers Construction** | 2025-10-19 → 2026-07-14 (+268d) | 2026-02-10 → 2026-12-14 (+307d) |  |  |
| MOD-SWN-PW-935 | Excavation Flow Meter Chamber for Sewerage Network Zone 3 | 2025-10-19 → 2026-07-14 A (+268d) | 2025-11-08 → 2026-10-11 (+337d) | 0% → 60% | 447d → 113.8d |
| MOD-SWN-PW-945 | Lean Concrete / Bedding Flow Meter Chamber for Sewerage Network Zone 3 | 2025-11-09 → 2026-07-29 A (+262d) | 2025-11-29 → 2026-10-23 (+328d) | 0% → 40% | 447d → 113.8d |
| MOD-SWN-VF-114 | Flow Meter Chambers Construction Flow Meter Chamber for Sewerage Network Zone 3 | 2026-01-07 → 2026-11-09 (+306d) | 2026-01-11 → 2026-11-14 (+307d) |  | 409d → 96.9d |
| MOD-SWN-PW-955 | Test Flow Meter Chamber for Sewerage Network Zone 3 | 2026-01-12 → 2026-11-14 (+306d) | 2026-01-26 → 2026-11-29 (+307d) |  | 409d → 96.9d |
| MOD-SWN-PW-925 | Backfilling Flow Meter Chamber for Sewerage Network Zone 3 | 2026-01-27 → 2026-11-29 (+306d) | 2026-02-10 → 2026-12-14 (+307d) |  | 409d → 96.9d |
| 7 | **Manholes** | 2025-10-19 → 2026-01-01 (+74d) | 2026-03-04 → 2026-12-03 (+274d) |  |  |
| MOD-SWN-MH-95 | Depth Variation for Manholes for Sewerage Network Zone 3 | 2025-12-18 → 2026-01-01 A (+14d) | 2025-12-27 → 2026-03-10 A (+73d) | 0% → 100% | 352.8d → none |
| 1 | **1200mm GRP Manholes with Backdrop** | 2025-10-19 → 2026-01-01 (+74d) | 2026-01-19 → 2026-02-13 (+25d) |  |  |
| MOD-SWN-PW-1615 | Excavation 1.2m GRP for Sewerage Network Zone 3 | 2025-10-19 → 2026-01-01 A (+74d) | 2025-11-08 → 2026-01-10 A (+63d) | 0% → 100% | 387d → none |
| MOD-SWN-PW-1625 | Lean Concrete / Bedding 1.2m GRP for Sewerage Network Zone 3 | 2025-11-09 → 2026-01-10 A (+62d) | 2025-11-29 → 2026-01-20 A (+52d) | 0% → 100% | 387d → none |
| MOD-SWN-MH-185 | 1200mm GRP Manholes with Backdrop 1.2m GRP for Sewerage Network Zone 3 | 2025-11-30 → 2026-01-13 A (+44d) | 2025-12-20 → 2026-01-23 A (+34d) | 0% → 100% | 387d → none |
| MOD-SWN-PW-1635 | Test 1.2m GRP for Sewerage Network Zone 3 | 2025-12-21 → 2026-01-24 A (+34d) | 2026-01-04 → 2026-01-31 A (+27d) | 0% → 100% | 431d → none |
| MOD-SWN-PW-1605 | Backfilling 1.2m GRP for Sewerage Network Zone 3 | 2026-01-05 → 2026-02-01 A (+27d) | 2026-01-19 → 2026-02-13 A (+25d) | 0% → 100% | 431d → none |
| 2 | **1500mm GRP Manholes (Standard & Backdrop)** | 2025-10-19 → 2026-02-02 (+106d) | 2026-02-09 → 2026-11-20 (+284d) |  |  |
| MOD-SWN-PW-1655 | Excavation 1.5m GRP for Sewerage Network Zone 3 | 2025-10-19 → 2026-02-02 A (+106d) | 2025-11-08 → 2026-10-05 (+331d) | 0% → 90% | 408d → 108.1d |
| MOD-SWN-PW-1665 | Lean Concrete / Bedding 1.5m GRP for Sewerage Network Zone 3 | 2025-11-09 → 2026-03-10 A (+121d) | 2025-11-29 → 2026-10-13 (+318d) | 0% → 70% | 408d → 108.1d |
| MOD-SWN-MH-195 | 1500mm GRP Manholes (Standard & Backdrop) 1.5m GRP for Sewerage Network Zone 3 | 2025-12-21 → 2026-03-18 A (+87d) | 2026-01-10 → 2026-10-21 (+284d) | 0% → 70% | 387d → 108.1d |
| MOD-SWN-PW-1675 | Test 1.5m GRP for Sewerage Network Zone 3 | 2026-01-11 → 2026-10-21 (+283d) | 2026-01-25 → 2026-11-05 (+284d) |  | 410d → 120.9d |
| MOD-SWN-PW-1645 | Backfilling 1.5m GRP for Sewerage Network Zone 3 | 2026-01-26 → 2026-11-05 (+283d) | 2026-02-09 → 2026-11-20 (+284d) |  | 410d → 120.9d |
| 3 | **1800mm GRP Manholes (Standard & Backdrop)** | 2025-10-19 → 2026-02-17 (+121d) | 2026-02-26 → 2026-11-27 (+274d) |  |  |
| MOD-SWN-PW-1695 | Excavation 1.8m GRP for Sewerage Network Zone 3 | 2025-10-19 → 2026-02-17 A (+121d) | 2025-11-08 → 2026-10-05 (+331d) | 0% → 90% | 429d → 116.5d |
| MOD-SWN-PW-1705 | Lean Concrete / Bedding 1.8m GRP for Sewerage Network Zone 3 | 2025-11-09 → 2026-02-24 A (+107d) | 2025-11-29 → 2026-10-13 (+318d) | 0% → 70% | 429d → 116.5d |
| MOD-SWN-MH-205 | 1800mm GRP Manholes (Standard & Backdrop) 1.8m GRP for Sewerage Network Zone 3 | 2026-01-11 → 2026-03-04 A (+52d) | 2026-01-27 → 2026-10-28 (+274d) | 0% → 70% | 387d → 108.1d |
| MOD-SWN-PW-1715 | Test 1.8m GRP for Sewerage Network Zone 3 | 2026-01-28 → 2026-10-28 (+273d) | 2026-02-11 → 2026-11-12 (+274d) |  | 393d → 114.1d |
| MOD-SWN-PW-1685 | Backfilling 1.8m GRP for Sewerage Network Zone 3 | 2026-02-12 → 2026-11-12 (+273d) | 2026-02-26 → 2026-11-27 (+274d) |  | 393d → 114.1d |
| 4 | **2000mm GRP Manholes (Standard & Backdrop)** | 2025-10-19 → 2026-02-15 (+119d) | 2026-03-04 → 2026-12-03 (+274d) |  |  |
| MOD-SWN-PW-1735 | Excavation 2m GRP for Sewerage Network Zone 3 | 2025-10-19 → 2026-02-15 A (+119d) | 2025-11-08 → 2026-10-05 (+331d) | 0% → 90% | 446d → 123.3d |
| MOD-SWN-PW-1745 | Lean Concrete / Bedding 2m GRP for Sewerage Network Zone 3 | 2025-11-09 → 2026-03-04 A (+115d) | 2025-11-29 → 2026-10-13 (+318d) | 0% → 70% | 446d → 123.3d |
| MOD-SWN-MH-215 | 2000mm GRP Manholes (Standard & Backdrop) 2m GRP for Sewerage Network Zone 3 | 2026-01-28 → 2026-10-28 (+273d) | 2026-02-02 → 2026-11-03 (+274d) |  | 387d → 108.1d |
| MOD-SWN-PW-1755 | Test 2m GRP for Sewerage Network Zone 3 | 2026-02-03 → 2026-11-03 (+273d) | 2026-02-17 → 2026-11-18 (+274d) |  | 387d → 108.1d |
| MOD-SWN-PW-1725 | Backfilling 2m GRP for Sewerage Network Zone 3 | 2026-02-18 → 2026-11-18 (+273d) | 2026-03-04 → 2026-12-03 (+274d) |  | 387d → 108.1d |
| 5 | **Pumping Stations** | 2025-10-13 → 2026-01-13 (+92d) | 2026-12-26 → 2027-04-17 (+112d) |  |  |
| 9 | **Perimeter Walls & Gates** | 2025-10-13 → 2026-05-04 (+203d) | 2025-12-11 → 2026-09-07 (+270d) |  |  |
| MOD-SWN-PS-984 | Perimeter wall – PS3 for Sewerage Network Zone 3 | 2025-10-13 → 2026-05-04 A (+203d) | 2025-11-05 → 2026-06-18 A (+225d) | 0% → 100% | 231.8d → none |
| MOD-SWN-PS-994 | Perimeter wall – PS4 for Sewerage Network Zone 3 | 2025-11-06 → 2026-05-21 A (+196d) | 2025-11-30 → 2026-06-24 A (+206d) | 0% → 100% | 245.8d → none |
| MOD-SWN-PS-1004 | Main entrance gates – PS3 & PS4 for Sewerage Network Zone 3 | 2025-12-01 → 2026-07-31 A (+242d) | 2025-12-11 → 2026-08-19 A (+251d) | 0% → 100% | 314.8d → none |
| MOD-SWN-PS-1014 | Personal entrance gate – PS3 & PS4 for Sewerage Network Zone 3 | 2025-12-01 → 2026-07-31 A (+242d) | 2025-12-04 → 2026-09-07 A (+277d) | 0% → 100% | 314.8d → none |
| 1 | **Sewage Pumps and MCC System** | 2026-11-08 → 2026-10-26 (-13d) | 2026-12-26 → 2026-12-14 (-12d) |  |  |
| MOD-SWN-PS-644 | Sewage pumps (2x30 l/s, 1x115 l/s) incl. MCC – PS3 for Sewerage Network Zone 3 | 2026-11-08 → 2026-10-26 (-13d) | 2026-12-01 → 2026-11-19 (-12d) |  | 40.6d → 50.79d |
| MOD-SWN-PS-654 | Sewage pumps (2x100 l/s) incl. MCC – PS4 for Sewerage Network Zone 3 | 2026-12-02 → 2026-11-19 (-13d) | 2026-12-26 → 2026-12-14 (-12d) |  | 40.6d → 50.79d |
| 2 | **Odor Control System** | 2026-08-31 → 2026-08-01 (-30d) | 2026-10-25 → 2026-09-17 (-38d) |  |  |
| MOD-SWN-PS-1134 | Odor control system – All stations (PS4) for Sewerage Network Zone 3 | 2026-09-28 → 2026-08-01 A (-58d) | 2026-10-25 → 2026-09-17 A (-38d) | 0% → 100% | 93.8d → none |
| MOD-SWN-PS-1124 | Odor control system – All stations (PS3) for Sewerage Network Zone 3 | 2026-08-31 → 2026-08-18 A (-13d) | 2026-09-28 → 2026-08-31 A (-28d) | 0% → 100% | 93.8d → none |
| 3 | **In-Line Booster Stations** | 2025-12-01 → 2026-10-03 (+306d) | 2026-02-11 → 2026-12-14 (+306d) |  |  |
| MOD-SWN-PS-674 | In-Line Booster Stations - Civil Works for Sewerage Network Zone 3 | 2025-12-01 → 2026-10-03 (+306d) | 2025-12-24 → 2026-10-26 (+306d) |  | 291.8d → 50.6d |
| MOD-SWN-PS-1144 | In-Line Booster Stations - Mechanical Works for Sewerage Network Zone 3 | 2025-12-25 → 2026-10-27 (+306d) | 2026-01-18 → 2026-11-19 (+305d) |  | 291.8d → 50.6d |
| MOD-SWN-PS-1154 | In-Line Booster Stations - Electrical Works for Sewerage Network Zone 3 | 2026-01-19 → 2026-11-21 (+306d) | 2026-02-11 → 2026-12-14 (+306d) |  | 291.8d → 50.6d |
| 7 | **Engine/Motor Control Center Buildings** | 2025-11-06 → 2026-10-03 (+331d) | 2025-12-08 → 2026-10-11 (+307d) |  |  |
| MOD-SWN-PS-934 | MCC Building – PS3 for Sewerage Network Zone 3 | 2025-11-06 → 2026-10-03 (+331d) | 2025-11-06 → 2026-10-03 (+331d) |  | 231.8d → -17.1d |
| MOD-SWN-PS-944 | MCC Building – PS4 for Sewerage Network Zone 3 | 2025-12-01 → 2026-10-04 (+307d) | 2025-12-08 → 2026-10-11 (+307d) |  | 245.8d → 15.3d |
| 4 | **Valves and Fittings (General Supply & Installation)** | 2025-12-18 → 2026-08-30 (+255d) | 2025-12-27 → 2026-11-05 (+313d) |  |  |
| MOD-SWN-PS-714 | Valves, fittings, flow meters – PS3 for Sewerage Network Zone 3 | 2025-12-18 → 2026-08-30 A (+255d) | 2025-12-20 → 2026-10-31 (+315d) | 0% → 20% | 196.8d → -39.35d |
| MOD-SWN-PS-724 | Valves, fittings, flow meters – PS4 for Sewerage Network Zone 3 | 2025-12-21 → 2026-09-01 A (+254d) | 2025-12-23 → 2026-11-03 (+315d) | 0% → 20% | 196.8d → -39.35d |
| MOD-SWN-PS-734 | 35mm SS 316 mesh network – PS4 for Sewerage Network Zone 3 | 2025-12-24 → 2026-09-08 A (+258d) | 2025-12-27 → 2026-11-05 (+313d) | 0% → 20% | 196.8d → -39.35d |
| 5 | **Tank with Canopy** | 2025-12-28 → 2026-11-05 (+312d) | 2026-01-10 → 2026-11-19 (+313d) |  |  |
| MOD-SWN-PS-754 | Tank with canopy (per specs/drawings) - PS4 for Sewerage Network Zone 3 | 2025-12-28 → 2026-11-05 (+312d) | 2026-01-10 → 2026-11-19 (+313d) |  | 196.8d → -39.35d |
| 6 | **Pump Well and Valve Chambers** | 2026-01-11 → 2026-11-19 (+312d) | 2026-05-14 → 2027-02-27 (+289d) |  |  |
| MOD-SWN-PS-844 | Pump well & valve chamber structure – PS3 (2 wells, 5x5m, 11m depth) for Sewerage Network Zone 3 | 2026-01-11 → 2026-11-19 (+312d) | 2026-02-03 → 2026-12-14 (+314d) |  | 196.8d → -39.35d |
| MOD-SWN-PS-854 | Concrete wall (5x5x1m) inside PS3 well for Sewerage Network Zone 3 | 2026-04-06 → 2026-12-14 (+252d) | 2026-04-11 → 2026-12-19 (+252d) |  | 228.8d → 17.95d |
| MOD-SWN-PS-884 | Pump well & valve chamber structure – PS4 (1 well, 4m, 11m depth) for Sewerage Network Zone 3 | 2026-02-04 → 2026-12-14 (+313d) | 2026-03-11 → 2027-01-09 (+304d) |  | 196.8d → -39.35d |
| MOD-SWN-PS-864 | Valve chamber – PS3 for Sewerage Network Zone 3 | 2026-04-11 → 2026-12-19 (+252d) | 2026-05-04 → 2027-01-11 (+252d) |  | 228.8d → 17.95d |

| ID | Task | Start | Finish | Duration | Complete | Total float |
| --- | --- | --- | --- | --- | --- | --- |
| MOD-SWN-PS-894 | Valve chamber – PS4 for Sewerage Network Zone 3 | 2026-03-12 → 2027-01-09 (+303d) | 2026-04-13 → 2027-02-02 (+295d) |  |  | 196.8d → -39.35d |
| MOD-SWN-PS-874 | Flow meter chamber – PS3 for Sewerage Network Zone 3 | 2026-05-04 → 2027-01-11 (+252d) | 2026-05-14 → 2027-01-21 (+252d) |  |  | 228.8d → 17.95d |
| MOD-SWN-PS-904 | Flow meter chamber – PS4 for Sewerage Network Zone 3 | 2026-04-13 → 2027-02-02 (+295d) | 2026-04-28 → 2027-02-27 (+305d) |  |  | 196.8d → -39.35d |
| 8 | **Odor Control System Base/Plinth** | 2026-06-03 → 2027-04-08 (+309d) | 2026-06-10 → 2027-04-15 (+309d) |  |  |  |
| MOD-SWN-PS-954 | Concrete plinth below odor control – PS3 & PS4 for Sewerage Network Zone 3 | 2026-06-03 → 2027-04-08 (+309d) | 2026-06-10 → 2027-04-15 (+309d) |  |  | 196.8d → -39.35d |
| 10 | **Lighting Works** | 2026-06-10 → 2026-01-13 (-148d) | 2026-06-25 → 2027-04-17 (+296d) |  |  |  |
| MOD-SWN-PS-1024 | 250W Flood Light installation – PS3 & PS4 for Sewerage Network Zone 3 | 2026-06-10 → 2026-01-13 A (-148d) | 2026-06-25 → 2027-04-17 (+296d) |  | 0% → 90% | 196.8d → -39.35d |
| 11 | **Duct Works** | 2026-04-28 → 2027-02-27 (+305d) | 2026-05-06 → 2027-03-16 (+314d) |  |  |  |
| MOD-SWN-PS-1034 | uPVC duct Track 1 – PS3 & PS4 for Sewerage Network Zone 3 | 2026-04-28 → 2027-02-27 (+305d) | 2026-04-29 → 2027-02-28 (+305d) |  |  | 196.8d → -39.35d |
| MOD-SWN-PS-1044 | uPVC duct Track 2 – PS3 & PS4 for Sewerage Network Zone 3 | 2026-04-29 → 2027-02-28 (+305d) | 2026-05-02 → 2027-03-04 (+306d) |  |  | 196.8d → -39.35d |
| MOD-SWN-PS-1054 | uPVC duct Track 8 – PS3 & PS4 for Sewerage Network Zone 3 | 2026-05-02 → 2027-03-04 (+306d) | 2026-05-06 → 2027-03-16 (+314d) |  |  | 196.8d → -39.35d |
| 12 | **Grounding Works** | 2026-05-06 → 2027-03-16 (+314d) | 2026-05-10 → 2027-03-20 (+314d) |  |  |  |
| MOD-SWN-PS-1064 | Grounding pit – PS3 & PS4 for Sewerage Network Zone 3 | 2026-05-06 → 2027-03-16 (+314d) | 2026-05-07 → 2027-03-17 (+314d) |  |  | 196.8d → -39.35d |
| MOD-SWN-PS-1074 | 600x600 Cable pull pit – PS3 & PS4 for Sewerage Network Zone 3 | 2026-05-07 → 2027-03-17 (+314d) | 2026-05-10 → 2027-03-20 (+314d) |  |  | 196.8d → -39.35d |
| 13 | **Landscaping / Interlocking Tiles** | 2026-05-10 → 2027-03-20 (+314d) | 2026-06-08 → 2027-04-13 (+309d) |  |  |  |
| MOD-SWN-PS-1084 | Building perimeter interlock tiles for Sewerage Network Zone 3 | 2026-05-10 → 2027-03-20 (+314d) | 2026-06-03 → 2027-04-08 (+309d) |  |  | 196.8d → -39.35d |
| MOD-SWN-PS-1094 | Entrance road paving tiles for Sewerage Network Zone 3 | 2026-06-03 → 2027-04-08 (+309d) | 2026-06-08 → 2027-04-13 (+309d) |  |  | 211.8d → -36.05d |
| 14 | **Pumping Station Internal Drainage Network** | 2026-05-10 → 2027-03-20 (+314d) | 2026-05-18 → 2027-03-28 (+314d) |  |  |  |
| MOD-SWN-PS-1104 | Internal surface drainage channels for Sewerage Network Zone 3 | 2026-05-10 → 2027-03-20 (+314d) | 2026-05-18 → 2027-03-28 (+314d) |  |  | 225.8d → -22.05d |
| 14 | **Rainwater Drainage Network Zone 3** | 2025-10-19 → 2026-01-05 (+78d) | 2026-01-18 → 2026-11-26 (+312d) |  |  |  |
| 1 | **Pipe Laying Works** | 2025-10-19 → 2026-01-05 (+78d) | 2026-01-18 → 2026-11-01 (+287d) |  |  |  |
| 2 | **Supply & Installation of uPVC Pipes (250–300mm dia)** | 2025-10-19 → 2026-01-05 (+78d) | 2025-12-13 → 2026-10-09 (+300d) |  |  |  |
| MOD-RWN-PL-233 | Excavation to required depth UPVC for Rainwater Drainage Network Zone 3 | 2025-10-19 → 2026-01-05 A (+78d) | 2025-11-08 → 2026-10-04 (+330d) |  | 0% → 95% | 13d → -97.11d |
| MOD-RWN-PL-243 | Lean Concrete / Bedding UPVC for Rainwater Drainage Network Zone 3 | 2025-11-09 → 2026-01-05 A (+57d) | 2025-11-13 → 2026-10-04 (+325d) |  | 0% → 95% | 13d → -97.11d |
| MOD-RWN-PL-253 | Laying of uPVC pipe UPVC for Rainwater Drainage Network Zone 3 | 2025-11-14 → 2026-01-05 A (+52d) | 2025-12-02 → 2026-10-05 (+307d) |  | 0% → 95% | 13d → -97.11d |
| MOD-RWN-PL-283 | Test (Pressure-slope) UPVC for Rainwater Drainage Network Zone 3 | 2025-12-03 → 2026-02-03 A (+62d) | 2025-12-05 → 2026-10-05 (+304d) |  | 0% → 80% | 13d → -97.11d |
| MOD-RWN-PL-263 | Coating / Wrapping UPVC for Rainwater Drainage Network Zone 3 | 2025-12-06 → 2026-02-23 A (+79d) | 2025-12-07 → 2026-10-06 (+303d) |  | 0% → 80% | 42d → -71.31d |
| MOD-RWN-PL-293 | Backfilling & Warning Tape UPVC for Rainwater Drainage Network Zone 3 | 2025-12-06 → 2026-06-21 A (+197d) | 2025-12-13 → 2026-10-09 (+300d) |  | 0% → 50% | 36d → -74.91d |
| 3 | **Supply & Installation of GRP Pipes (350–800mm dia)** | 2025-10-19 → 2026-01-05 (+78d) | 2026-01-18 → 2026-10-23 (+278d) |  |  |  |
| MOD-RWN-PL-313 | Excavate short trench paths GRP for Rainwater Drainage Network Zone 3 | 2025-10-19 → 2026-01-05 A (+78d) | 2025-11-08 → 2026-02-01 A (+85d) |  | 0% → 100% | 0d → none |
| MOD-RWN-PL-323 | Lean Concrete / bedding material GRP for Rainwater Drainage Network Zone 3 | 2025-11-09 → 2026-01-05 A (+57d) | 2025-11-16 → 2026-08-15 A (+272d) |  | 0% → 100% | 0d → none |
| MOD-RWN-PL-333 | Lay & connect GRP for Rainwater Drainage Network Zone 3 | 2025-11-17 → 2026-01-05 A (+49d) | 2025-12-07 → 2026-08-16 A (+252d) |  | 0% → 100% | 0d → none |
| MOD-RWN-PL-343 | Test (Pressure-slope) GRP for Rainwater Drainage Network Zone 3 | 2025-12-08 → 2026-06-01 A (+175d) | 2025-12-18 → 2026-10-08 (+294d) |  | 0% → 50% | 0d → -89.06d |
| MOD-RWN-PL-344 | Coating / Wrapping GRP for Rainwater Drainage Network Zone 3 | 2025-12-19 → 2026-07-01 A (+194d) | 2026-01-08 → 2026-10-18 (+283d) |  | 0% → 50% | 0d → -89.06d |
| MOD-RWN-PL-353 | Backfilling & compaction GRP for Rainwater Drainage Network Zone 3 | 2026-01-09 → 2026-08-01 A (+204d) | 2026-01-18 → 2026-10-23 (+278d) |  | 0% → 50% | 0d → -89.06d |
| 4 | **uPVC Connection Pipes (150mm dia)** | 2025-10-19 → 2026-01-05 (+78d) | 2026-01-05 → 2026-11-01 (+300d) |  |  |  |
| MOD-RWN-PL-373 | Excavate short trench paths UPVC Con. for Rainwater Drainage Network Zone 3 | 2025-10-19 → 2026-01-05 A (+78d) | 2025-10-23 → 2026-10-03 (+345d) |  | 0% → 95% | 50d → -95.29d |
| MOD-RWN-PL-383 | Lean Concrete / bedding material UPVC Con. for Rainwater Drainage Network Zone 3 | 2025-10-24 → 2026-01-05 A (+73d) | 2025-10-26 → 2026-10-03 (+342d) |  | 0% → 94% | 50d → -95.29d |
| MOD-RWN-PL-393 | Lay & connect UPVC Con. for Rainwater Drainage Network Zone 3 | 2025-12-03 → 2026-01-05 A (+33d) | 2025-12-10 → 2026-10-06 (+300d) |  | 0% → 90% | 13d → -97.11d |
| MOD-RWN-PL-403 | Test (Pressure-slope) UPVC Con. for Rainwater Drainage Network Zone 3 | 2025-12-11 → 2026-10-06 (+299d) | 2025-12-13 → 2026-10-09 (+300d) |  |  | 13d → -97.11d |
| MOD-RWN-PL-723 | Coating / Wrapping UPVC Con. for Rainwater Drainage Network Zone 3 | 2025-12-14 → 2026-10-09 (+299d) | 2026-01-03 → 2026-10-30 (+300d) |  |  | 13d → -97.11d |
| MOD-RWN-PL-413 | Backfilling & compaction UPVC Con. for Rainwater Drainage Network Zone 3 | 2026-01-04 → 2026-10-30 (+299d) | 2026-01-05 → 2026-11-01 (+300d) |  |  | 13d → -97.11d |
| 5 | **Precast Concrete Box Culverts** | 2025-10-19 → 2026-03-01 (+133d) | 2026-01-18 → 2026-11-26 (+312d) |  |  |  |
| 1 | **Box Culverts (500x500mm to 3500x800mm)** | 2025-10-19 → 2026-03-01 (+133d) | 2026-01-18 → 2026-11-26 (+312d) |  |  |  |
| MOD-RWN-PC-234 | Survey and layout alignment Box culvert for Rainwater Drainage Network Zone 3 | 2025-10-19 → 2026-03-01 A (+133d) | 2025-10-22 → 2026-03-16 A (+145d) |  | 0% → 100% | 0.9d → none |
| MOD-RWN-PC-444 | Setting Bench mark & levels Box culvert for Rainwater Drainage Network Zone 3 | 2025-10-22 → 2026-03-10 A (+139d) | 2025-10-26 → 2026-03-21 A (+146d) |  | 0% → 100% | 0.9d → none |
| MOD-RWN-PC-454 | Cleaning Box culvert for Rainwater Drainage Network Zone 3 | 2025-10-26 → 2026-03-23 A (+148d) | 2025-10-30 → 2026-03-30 A (+151d) |  | 0% → 100% | 0.9d → none |
| MOD-RWN-PC-464 | Testing Box culvert for Rainwater Drainage Network Zone 3 | 2025-10-30 → 2026-03-30 A (+151d) | 2025-11-02 → 2026-05-02 A (+181d) |  | 0% → 100% | 0.9d → none |
| MOD-RWN-PC-244 | Excavation to required depth Box culvert for Rainwater Drainage Network Zone 3 | 2025-11-02 → 2026-04-06 A (+155d) | 2025-11-15 → 2026-05-10 A (+176d) | 11d → 5d | 0% → 100% | 0.9d → none |
| MOD-RWN-PC-254 | Dewatering and trench shoring Box culvert for Rainwater Drainage Network Zone 3 | 2025-11-15 → 2026-09-05 A (+294d) | 2025-12-02 → 2026-10-11 (+313d) | 15d → 10d | 0% → 25% | 0.9d → -104.56d |
| MOD-RWN-PC-264 | Bedding preparation (gravel/lean concrete) Box culvert for Rainwater Drainage Network Zone 3 | 2025-12-02 → 2026-10-11 (+313d) | 2025-12-07 → 2026-10-15 (+312d) |  |  | 0.9d → -104.56d |
| MOD-RWN-PC-274 | Installation of box culvert units Box culvert for Rainwater Drainage Network Zone 3 | 2025-12-07 → 2026-10-15 (+312d) | 2025-12-18 → 2026-10-27 (+313d) |  |  | 0.9d → -104.56d |
| MOD-RWN-PC-284 | Alignment and joint sealing Box culvert for Rainwater Drainage Network Zone 3 | 2025-12-18 → 2026-10-27 (+313d) | 2025-12-23 → 2026-11-01 (+313d) |  |  | 0.9d → -104.56d |
| MOD-RWN-PC-294 | Construct headwalls/wing walls (if needed) Box culvert for Rainwater Drainage Network Zone 3 | 2025-12-23 → 2026-11-01 (+313d) | 2026-01-06 → 2026-11-15 (+313d) |  |  | 0.9d → -104.56d |
| MOD-RWN-PC-304 | Backfilling and compaction Box culvert for Rainwater Drainage Network Zone 3 | 2026-01-06 → 2026-11-15 (+313d) | 2026-01-14 → 2026-11-23 (+313d) |  |  | 0.9d → -104.56d |
| MOD-RWN-PC-314 | Surface finishing Box culvert for Rainwater Drainage Network Zone 3 | 2026-01-14 → 2026-11-23 (+313d) | 2026-01-18 → 2026-11-26 (+312d) |  |  | 0.9d → -104.56d |
| 2 | **Tube Culverts at Road Intersections** | 2025-11-15 → 2026-04-01 (+137d) | 2026-01-07 → 2026-05-12 (+125d) |  |  |  |
| MOD-RWN-PC-324 | Traffic control setup Tube culvert for Rainwater Drainage Network Zone 3 | 2025-11-15 → 2026-04-01 A (+137d) | 2025-11-17 → 2026-04-13 A (+147d) |  | 0% → 100% | 9d → none |
| MOD-RWN-PC-344 | Pipe bedding and twin pipe alignment Tube culvert for Rainwater Drainage Network Zone 3 | 2025-11-30 → 2026-04-01 A (+122d) | 2025-12-07 → 2026-04-07 A (+121d) |  | 0% → 100% | 9d → none |
| MOD-RWN-PC-354 | Pipe laying and jointing Tube culvert for Rainwater Drainage Network Zone 3 | 2025-12-07 → 2026-04-08 A (+122d) | 2025-12-29 → 2026-04-15 A (+107d) |  | 0% → 100% | 9d → none |
| MOD-RWN-PC-364 | Backfilling and road reinstatement Tube culvert for Rainwater Drainage Network Zone 3 | 2025-12-30 → 2026-04-13 A (+104d) | 2026-01-07 → 2026-04-18 A (+101d) |  | 0% → 100% | 9d → none |
| MOD-RWN-PC-334 | Trench excavation under road Tube culvert for Rainwater Drainage Network Zone 3 | 2025-11-17 → 2026-05-02 A (+166d) | 2025-11-30 → 2026-05-12 A (+163d) |  | 0% → 100% | 9d → none |
| 3 | **Box Culverts at Road Intersections** | 2025-11-17 → 2026-04-01 (+135d) | 2025-12-31 → 2026-04-30 (+120d) |  |  |  |
| MOD-RWN-PC-384 | Deep trench excavation with shoring for Rainwater Drainage Network Zone 3 | 2025-11-29 → 2026-04-01 A (+123d) | 2025-11-30 → 2026-04-04 A (+125d) |  | 0% → 100% | 15.9d → none |
| MOD-RWN-PC-394 | Place bedding material for Rainwater Drainage Network Zone 3 | 2025-11-30 → 2026-04-05 A (+126d) | 2025-12-01 → 2026-04-09 A (+129d) |  | 0% → 100% | 15.9d → none |
| MOD-RWN-PC-404 | Install precast box culvert for Rainwater Drainage Network Zone 3 | 2025-12-01 → 2026-04-09 A (+129d) | 2025-12-06 → 2026-04-11 A (+126d) |  | 0% → 100% | 15.9d → none |
| MOD-RWN-PC-414 | Construct connection chambers (if needed) for Rainwater Drainage Network Zone 3 | 2025-12-06 → 2026-04-12 A (+127d) | 2025-12-07 → 2026-04-18 A (+132d) |  | 0% → 100% | 15.9d → none |
| MOD-RWN-PC-374 | Traffic diversion and barricading for Rainwater Drainage Network Zone 3 | 2025-11-17 → 2026-04-14 A (+148d) | 2025-11-29 → 2026-04-22 A (+144d) |  | 0% → 100% | 15.9d → none |
| MOD-RWN-PC-424 | Joint treatment and testing for Rainwater Drainage Network Zone 3 | 2025-12-07 → 2026-04-15 A (+129d) | 2025-12-21 → 2026-04-22 A (+122d) |  | 0% → 100% | 15.9d → none |
| MOD-RWN-PC-434 | Backfilling and surface reinstatement for Rainwater Drainage Network Zone 3 | 2025-12-21 → 2026-04-18 A (+118d) | 2025-12-31 → 2026-04-30 A (+120d) |  | 0% → 100% | 15.9d → none |

| ID | Task | Start | Finish | Complete | Total float |
| --- | --- | --- | --- | --- | --- |
| 4 | **Manholes** | 2025-12-07 → 2026-10-15 (+312d) | 2026-01-18 → 2026-11-26 (+312d) |  |  |
| 1 | **Circular GRP Manholes (1200–1800mm dia)** | 2025-12-07 → 2026-10-15 (+312d) | 2026-01-13 → 2026-11-22 (+313d) |  |  |
| MOD-RWN-MH-234 | Excavate to full manhole depth Circular Manhole for Rainwater Drainage Network Zone 3 | 2025-12-07 → 2026-10-15 (+312d) | 2025-12-15 → 2026-10-24 (+313d) |  | 4.9d → -100.56d |
| MOD-RWN-MH-244 | Dewatering and safety barriers Circular Manhole for Rainwater Drainage Network Zone 3 | 2025-12-15 → 2026-10-24 (+313d) | 2025-12-22 → 2026-10-31 (+313d) |  | 4.9d → -100.56d |
| MOD-RWN-MH-254 | Concrete base construction Circular Manhole for Rainwater Drainage Network Zone 3 | 2025-12-22 → 2026-10-31 (+313d) | 2025-12-24 → 2026-11-02 (+313d) |  | 4.9d → -100.56d |
| MOD-RWN-MH-264 | Install GRP manhole shaft sections Circular Manhole for Rainwater Drainage Network Zone 3 | 2025-12-24 → 2026-11-02 (+313d) | 2026-01-01 → 2026-11-10 (+313d) |  | 4.9d → -100.56d |
| MOD-RWN-MH-274 | Place slab and cover frame Circular Manhole for Rainwater Drainage Network Zone 3 | 2026-01-01 → 2026-11-10 (+313d) | 2026-01-08 → 2026-11-17 (+313d) |  | 4.9d → -100.56d |
| MOD-RWN-MH-284 | Waterproofing Circular Manhole for Rainwater Drainage Network Zone 3 | 2026-01-08 → 2026-11-17 (+313d) | 2026-01-11 → 2026-11-19 (+312d) |  | 4.9d → -100.56d |
| MOD-RWN-MH-294 | Backfilling and compaction Circular Manhole for Rainwater Drainage Network Zone 3 | 2026-01-11 → 2026-11-19 (+312d) | 2026-01-13 → 2026-11-22 (+313d) |  | 4.9d → -100.56d |
| 3 | **Concrete Manholes for 1500x1500 Box Pipes** | 2025-12-07 → 2026-10-15 (+312d) | 2026-01-13 → 2026-11-22 (+313d) |  |  |
| MOD-RWN-MH-374 | Excavation Concrete Manhole 1.5x1.5 for Rainwater Drainage Network Zone 3 | 2025-12-07 → 2026-10-15 (+312d) | 2025-12-14 → 2026-10-22 (+312d) |  | 4.9d → -100.56d |
| MOD-RWN-MH-384 | Base slab and wall shuttering Concrete Manhole 1.5x1.5 for Rainwater Drainage Network Zone 3 | 2025-12-14 → 2026-10-22 (+312d) | 2025-12-18 → 2026-10-27 (+313d) |  | 4.9d → -100.56d |
| MOD-RWN-MH-394 | Wall reinforcement and casting Concrete Manhole 1.5x1.5 for Rainwater Drainage Network Zone 3 | 2025-12-18 → 2026-10-27 (+313d) | 2025-12-28 → 2026-11-05 (+312d) |  | 4.9d → -100.56d |
| MOD-RWN-MH-404 | Roof slab with openings Concrete Manhole 1.5x1.5 for Rainwater Drainage Network Zone 3 | 2025-12-28 → 2026-11-05 (+312d) | 2026-01-01 → 2026-11-10 (+313d) |  | 4.9d → -100.56d |
| MOD-RWN-MH-414 | Masonry/benching works inside Concrete Manhole 1.5x1.5 for Rainwater Drainage Network Zone 3 | 2026-01-01 → 2026-11-10 (+313d) | 2026-01-07 → 2026-11-16 (+313d) |  | 4.9d → -100.56d |
| MOD-RWN-MH-424 | Install cover and frame Concrete Manhole 1.5x1.5 for Rainwater Drainage Network Zone 3 | 2026-01-07 → 2026-11-16 (+313d) | 2026-01-10 → 2026-11-18 (+312d) |  | 4.9d → -100.56d |
| MOD-RWN-MH-434 | Backfill in layers Concrete Manhole 1.5x1.5 for Rainwater Drainage Network Zone 3 | 2026-01-10 → 2026-11-18 (+312d) | 2026-01-13 → 2026-11-22 (+313d) |  | 4.9d → -100.56d |
| 2 | **Concrete Manholes for 1000x1000 Box Pipes** | 2025-12-07 → 2026-10-15 (+312d) | 2026-01-18 → 2026-11-26 (+312d) |  |  |
| MOD-RWN-MH-304 | Excavation Concrete Manhole 1x1 for Rainwater Drainage Network Zone 3 | 2025-12-07 → 2026-10-15 (+312d) | 2025-12-14 → 2026-10-22 (+312d) |  | 0.9d → -104.56d |
| MOD-RWN-MH-314 | Base slab and wall shuttering Concrete Manhole 1x1 for Rainwater Drainage Network Zone 3 | 2025-12-14 → 2026-10-22 (+312d) | 2025-12-18 → 2026-10-27 (+313d) |  | 0.9d → -104.56d |
| MOD-RWN-MH-324 | Wall reinforcement and casting Concrete Manhole 1x1 for Rainwater Drainage Network Zone 3 | 2025-12-18 → 2026-10-27 (+313d) | 2025-12-25 → 2026-11-03 (+313d) |  | 0.9d → -104.56d |
| MOD-RWN-MH-334 | Roof slab with openings Concrete Manhole 1x1 for Rainwater Drainage Network Zone 3 | 2025-12-25 → 2026-11-03 (+313d) | 2025-12-30 → 2026-11-08 (+313d) |  | 0.9d → -104.56d |
| MOD-RWN-MH-344 | Masonry/benching works inside Concrete Manhole 1x1 for Rainwater Drainage Network Zone 3 | 2025-12-30 → 2026-11-08 (+313d) | 2026-01-07 → 2026-11-16 (+313d) |  | 0.9d → -104.56d |
| MOD-RWN-MH-354 | Install cover and frame Concrete Manhole 1x1 for Rainwater Drainage Network Zone 3 | 2026-01-07 → 2026-11-16 (+313d) | 2026-01-12 → 2026-11-21 (+313d) |  | 0.9d → -104.56d |
| MOD-RWN-MH-364 | Backfill in layers Concrete Manhole 1x1 for Rainwater Drainage Network Zone 3 | 2026-01-12 → 2026-11-21 (+313d) | 2026-01-18 → 2026-11-26 (+312d) |  | 0.9d → -104.56d |
| 2 | **Chambers and Catch Basins** | 2025-12-07 → 2026-01-18 (+42d) | 2026-01-17 → 2026-10-21 (+277d) |  |  |
| 1 | **Gully Outfalls** | 2025-12-07 → 2026-01-18 (+42d) | 2026-01-05 → 2026-10-17 (+285d) |  |  |
| MOD-RWN-CC-168 | Identify discharge zones Gully Outfall for Rainwater Drainage Network Zone 3 | 2025-12-07 → 2026-01-18 A (+42d) | 2025-12-11 → 2026-02-10 A (+61d) | 0% → 100% | 11.9d → none |
| MOD-RWN-CC-178 | Excavate outfall channel Gully Outfall for Rainwater Drainage Network Zone 3 | 2025-12-11 → 2026-02-01 A (+52d) | 2025-12-17 → 2026-08-31 A (+257d) | 0% → 100% | 11.9d → none |
| MOD-RWN-CC-188 | Place concrete apron or pipes Gully Outfall for Rainwater Drainage Network Zone 3 | 2025-12-17 → 2026-03-10 A (+83d) | 2025-12-29 → 2026-09-08 A (+253d) | 0% → 100% | 11.9d → none |
| MOD-RWN-CC-198 | Provide slope protection (riprap) Gully Outfall for Rainwater Drainage Network Zone 3 | 2025-12-29 → 2026-03-16 A (+77d) | 2026-01-03 → 2026-10-15 (+285d) | 0% → 96% | 11.9d → -69.72d |
| MOD-RWN-CC-208 | Compact and shape terrain Gully Outfall for Rainwater Drainage Network Zone 3 | 2026-01-03 → 2026-06-23 A (+171d) | 2026-01-05 → 2026-10-17 (+285d) | 0% → 50% | 11.9d → -69.72d |
| 2 | **Rainwater Catch Basins** | 2025-12-07 → 2026-02-08 (+63d) | 2026-01-10 → 2026-10-15 (+278d) |  |  |
| MOD-RWN-CC-218 | Excavate pit area Catch Basin for Rainwater Drainage Network Zone 3 | 2025-12-07 → 2026-02-08 A (+63d) | 2025-12-14 → 2026-06-22 A (+190d) | 0% → 100% | 0.9d → none |
| MOD-RWN-CC-228 | Lay bedding and place chamber Catch Basin for Rainwater Drainage Network Zone 3 | 2025-12-14 → 2026-03-10 A (+86d) | 2025-12-28 → 2026-06-23 A (+177d) | 0% → 100% | 0.9d → none |
| MOD-RWN-CC-238 | Connect lateral inlet pipe Catch Basin for Rainwater Drainage Network Zone 3 | 2025-12-28 → 2026-03-18 A (+80d) | 2026-01-01 → 2026-06-24 A (+174d) | 0% → 100% | 0.9d → none |
| MOD-RWN-CC-248 | Cover with grating Catch Basin for Rainwater Drainage Network Zone 3 | 2026-01-01 → 2026-03-21 A (+79d) | 2026-01-07 → 2026-06-25 A (+169d) | 0% → 100% | 7.9d → none |
| MOD-RWN-CC-258 | Backfill and surface finish Catch Basin for Rainwater Drainage Network Zone 3 | 2026-01-07 → 2026-07-01 A (+175d) | 2026-01-10 → 2026-10-15 (+278d) | 0% → 94% | 7.9d → -68.68d |
| 3 | **Precast Chambers for Absorption Pits** | 2025-12-07 → 2026-02-12 (+67d) | 2026-01-17 → 2026-10-21 (+277d) |  |  |
| MOD-RWN-CC-268 | Excavate pit area Absorption Pit for Rainwater Drainage Network Zone 3 | 2025-12-07 → 2026-02-12 A (+67d) | 2025-12-15 → 2026-04-22 A (+128d) | 0% → 100% | 1.9d → none |
| MOD-RWN-CC-278 | Install base slab and precast chamber Absorption Pit for Rainwater Drainage Network Zone 3 | 2025-12-15 → 2026-03-14 A (+89d) | 2025-12-29 → 2026-04-24 A (+116d) | 0% → 100% | 1.9d → none |
| MOD-RWN-CC-288 | Connect outlet/inlet piping Absorption Pit for Rainwater Drainage Network Zone 3 | 2025-12-29 → 2026-03-24 A (+85d) | 2026-01-04 → 2026-03-26 A (+81d) | 0% → 100% | 1.9d → none |
| MOD-RWN-CC-298 | Waterproofing and protection Absorption Pit for Rainwater Drainage Network Zone 3 | 2026-01-04 → 2026-03-27 A (+82d) | 2026-01-11 → 2026-03-31 A (+79d) | 0% → 100% | 1.9d → none |
| MOD-RWN-CC-308 | Backfill and compact Absorption Pit for Rainwater Drainage Network Zone 3 | 2026-01-11 → 2026-10-15 (+277d) | 2026-01-17 → 2026-10-21 (+277d) |  | 1.9d → -73.56d |
| 3 | **Gully Outfalls to Swales** | 2025-12-28 → 2026-02-01 (+35d) | 2026-01-18 → 2026-11-05 (+291d) |  |  |
| 1 | **Gully Outfalls to Swales** | 2025-12-28 → 2026-02-01 (+35d) | 2026-01-17 → 2026-10-20 (+276d) |  |  |
| MOD-RWN-GO-101 | Identify swale discharge zones Gully Outfall to Swales for Rainwater Drainage Network Zone 3 | 2025-12-28 → 2026-02-01 A (+35d) | 2025-12-31 → 2026-02-16 A (+47d) | 0% → 100% | 1.9d → none |
| MOD-RWN-GO-111 | Excavate outfall channel Gully Outfall to Swales for Rainwater Drainage Network Zone 3 | 2025-12-31 → 2026-02-09 A (+40d) | 2026-01-05 → 2026-10-15 (+283d) | 0% → 90% | 1.9d → -72.56d |
| MOD-RWN-GO-121 | Place concrete apron or pipes Gully Outfall to Swales for Rainwater Drainage Network Zone 3 | 2026-01-05 → 2026-03-01 A (+55d) | 2026-01-11 → 2026-10-17 (+279d) | 0% → 80% | 1.9d → -72.56d |
| MOD-RWN-GO-131 | Provide slope protection (riprap) Gully Outfall to Swales for Rainwater Drainage Network Zone 3 | 2026-01-11 → 2026-03-04 A (+52d) | 2026-01-14 → 2026-10-18 (+277d) | 0% → 80% | 1.9d → -72.56d |
| MOD-RWN-GO-141 | Compact and shape terrain Gully Outfall to Swales for Rainwater Drainage Network Zone 3 | 2026-01-14 → 2026-10-18 (+277d) | 2026-01-17 → 2026-10-20 (+276d) |  | 1.9d → -72.56d |
| 2 | **Riprap Works & Protection** | 2025-12-28 → 2026-10-15 (+291d) | 2026-01-18 → 2026-11-05 (+291d) |  |  |
| MOD-RWN-GO-151 | Lay filter fabric/membrane for Rainwater Drainage Network Zone 3 | 2025-12-28 → 2026-10-15 (+291d) | 2025-12-31 → 2026-10-19 (+292d) |  | 0.9d → -86.56d |
| MOD-RWN-GO-161 | Place riprap/stone layer for Rainwater Drainage Network Zone 3 | 2025-12-31 → 2026-10-19 (+292d) | 2026-01-12 → 2026-10-31 (+292d) |  | 0.9d → -86.56d |
| MOD-RWN-GO-171 | Compact edges for Rainwater Drainage Network Zone 3 | 2026-01-12 → 2026-10-31 (+292d) | 2026-01-15 → 2026-11-03 (+292d) |  | 0.9d → -86.56d |
| MOD-RWN-GO-181 | Ensure hydraulic flow direction for Rainwater Drainage Network Zone 3 | 2026-01-15 → 2026-11-03 (+292d) | 2026-01-18 → 2026-11-05 (+291d) |  | 0.9d → -86.56d |
| 6 | **Backfilling & Bedding** | 2025-11-02 → 2026-03-17 (+135d) | 2026-01-18 → 2026-10-26 (+281d) |  |  |
| 1 | **Backfilling Materials (Type A – 201–700mm Pipes)** | 2025-11-02 → 2026-03-17 (+135d) | 2026-01-05 → 2026-10-04 (+272d) |  |  |
| MOD-RWN-BB-112 | Place granular bedding under pipe for Rainwater Drainage Network Zone 3 | 2025-11-02 → 2026-03-17 A (+135d) | 2025-11-09 → 2026-10-03 (+328d) | 0% → 98% | 11.9d → -58.65d |
| MOD-RWN-BB-122 | Lay and align pipe for Rainwater Drainage Network Zone 3 | 2025-11-09 → 2026-03-21 A (+132d) | 2025-12-03 → 2026-10-03 (+304d) | 0% → 97% | 11.9d → -58.65d |
| MOD-RWN-BB-132 | Backfill up to spring line for Rainwater Drainage Network Zone 3 | 2025-12-03 → 2026-03-25 A (+112d) | 2025-12-18 → 2026-10-04 (+290d) | 0% → 97% | 11.9d → -58.65d |
| MOD-RWN-BB-142 | Compact layer-wise for Rainwater Drainage Network Zone 3 | 2025-12-18 → 2026-07-01 A (+195d) | 2025-12-29 → 2026-10-04 (+279d) | 0% → 97% | 11.9d → -58.65d |
| MOD-RWN-BB-152 | Final fill to subgrade level for Rainwater Drainage Network Zone 3 | 2025-12-29 → 2026-08-01 A (+215d) | 2026-01-05 → 2026-10-04 (+272d) | 0% → 97% | 11.9d → -58.65d |
| 2 | **Gravel Bedding & Filter Cloth for uPVC Drain Pipes** | 2025-11-15 → 2026-03-21 (+126d) | 2026-01-18 → 2026-10-26 (+281d) |  |  |
| MOD-RWN-BB-162 | Line trench with filter cloth for Rainwater Drainage Network Zone 3 | 2025-11-15 → 2026-03-21 A (+126d) | 2025-11-26 → 2026-10-03 (+311d) | 0% → 90% | 0.9d → -77.56d |
| MOD-RWN-BB-172 | Place and compact gravel bedding for Rainwater Drainage Network Zone 3 | 2025-11-26 → 2026-03-23 A (+117d) | 2025-12-03 → 2026-10-04 (+305d) | 0% → 90% | 0.9d → -77.56d |
| MOD-RWN-BB-182 | Lay pipe within gravel zone for Rainwater Drainage Network Zone 3 | 2025-12-03 → 2026-03-29 A (+116d) | 2025-12-28 → 2026-10-06 (+282d) | 0% → 90% | 0.9d → -77.56d |
| MOD-RWN-BB-192 | Wrap filter cloth above pipe for Rainwater Drainage Network Zone 3 | 2025-12-28 → 2026-07-01 A (+185d) | 2026-01-04 → 2026-10-12 (+281d) | 0% → 20% | 0.9d → -77.56d |
| MOD-RWN-BB-202 | Final fill and trench restoration for Rainwater Drainage Network Zone 3 | 2026-01-04 → 2026-10-12 (+281d) | 2026-01-18 → 2026-10-26 (+281d) |  | 0.9d → -77.56d |
| 7 | **Deep Basin for Groundwater Collection (2.5–3.0m)** | 2025-11-10 → 2026-02-02 (+84d) | 2026-01-18 → 2026-10-26 (+281d) |  |  |

| ID | Task | Start | Finish | Duration | Complete | Total float |
| --- | --- | --- | --- | --- | --- | --- |
| MOD-RWN-DB-001 | Deep excavation and safety shoring for Rainwater Drainage Network Zone 3 | 2025-11-10 → 2026-02-02 A (+84d) | 2025-11-18 → 2026-04-01 A (+134d) |  | 0% → 100% | 0.9d → none |
| MOD-RWN-DB-002 | Base and side wall construction (cast-in-situ or precast) for Rainwater Drainage Network Zone 3 | 2025-11-18 → 2026-02-09 A (+83d) | 2025-11-30 → 2026-10-04 (+308d) |  | 0% → 90% | 0.9d → -77.71d |
| MOD-RWN-DB-003 | Pipe connections for inflow for Rainwater Drainage Network Zone 3 | 2025-11-30 → 2026-02-16 A (+78d) | 2025-12-14 → 2026-10-06 (+296d) |  | 0% → 85% | 0.9d → -77.71d |
| MOD-RWN-DB-004 | Cover slab and access shaft for Rainwater Drainage Network Zone 3 | 2025-12-14 → 2026-02-24 A (+72d) | 2025-12-29 → 2026-10-10 (+285d) |  | 0% → 80% | 0.9d → -77.71d |
| MOD-RWN-DB-005 | Waterproofing & sealant for Rainwater Drainage Network Zone 3 | 2025-12-29 → 2026-07-04 A (+187d) | 2026-01-10 → 2026-10-18 (+281d) |  | 0% → 25% | 0.9d → -77.71d |
| MOD-RWN-DB-006 | Backfill in controlled layers for Rainwater Drainage Network Zone 3 | 2026-01-10 → 2026-10-18 (+281d) | 2026-01-18 → 2026-10-26 (+281d) |  |  | 0.9d → -77.71d |
| 13 | **Potable Water Network Zone 3** | 2025-10-19 → 2025-10-13 (-6d) | 2026-01-18 → 2026-12-22 (+338d) |  |  |  |
| 13 | **Pipe Installation Works** | 2025-10-19 → 2026-01-01 (+74d) | 2025-12-14 → 2026-10-13 (+303d) |  |  |  |
| MOD-PWN-PI-313 | Trench Excavation for Potable Water Network Zone 3 | 2025-10-19 → 2026-01-01 A (+74d) | 2025-11-08 → 2026-01-04 A (+57d) |  | 0% → 100% | 1d → none |
| MOD-PWN-PI-323 | Lean Concrete / Pipe Bedding Preparation for Potable Water Network Zone 3 | 2025-11-09 → 2026-01-13 A (+65d) | 2025-11-12 → 2026-10-04 (+326d) |  | 0% → 70% | 35d → 79.15d |
| MOD-PWN-PI-333 | HDPE Pipe Laying (200 mm to 710 mm) for Potable Water Network Zone 3 | 2025-11-13 → 2026-01-16 A (+64d) | 2025-12-03 → 2026-10-08 (+309d) | 21d → 10d | 0% → 60% | 35d → 79.15d |
| MOD-PWN-PI-343 | Test (Pressure-slope) for Potable Water Network Zone 3 | 2025-12-04 → 2026-02-01 A (+59d) | 2025-12-06 → 2026-10-09 (+307d) |  | 0% → 55% | 35d → 79.15d |
| MOD-PWN-PI-353 | Coating / Wrapping for Potable Water Network Zone 3 | 2025-12-07 → 2026-02-09 A (+64d) | 2025-12-11 → 2026-10-11 (+304d) |  | 0% → 55% | 35d → 79.15d |
| MOD-PWN-PI-363 | Backfilling & Warrning Tape for Potable Water Network Zone 3 | 2025-12-12 → 2026-02-23 A (+73d) | 2025-12-14 → 2026-10-13 (+303d) |  | 0% → 55% | 35d → 79.15d |
| 2 | **Valve Installation & Chambers** | 2025-11-09 → 2026-06-02 (+205d) | 2026-01-18 → 2026-10-27 (+282d) |  |  |  |
| MOD-PWN-VC-87 | Butterfly Valves (355, 500, 630 mm) for Potable Water Network Zone 3 | 2025-12-07 → 2026-06-02 A (+177d) | 2025-12-24 → 2026-10-04 (+284d) |  | 0% → 90% | 0d → 57.06d |
| MOD-PWN-VC-97 | 3-exit (2 x 2.5-inch and 1 x 4-inch) dry vacuum cylinder detachable fire nozzle for Potable Water Network Zone 3 | 2025-12-07 → 2026-06-15 A (+190d) | 2025-12-25 → 2026-10-03 (+282d) |  | 0% → 98% | 0d → 57.06d |
| MOD-PWN-VC-107 | Valve Chamber Excavation for Potable Water Network Zone 3 | 2025-11-09 → 2026-06-20 A (+223d) | 2025-11-19 → 2026-10-03 (+318d) |  | 0% → 90% | 14d → 49.56d |
| MOD-PWN-VC-117 | RC Slab, Walls, or Precast Chambers for Potable Water Network Zone 3 | 2025-11-20 → 2026-06-21 A (+213d) | 2025-11-27 → 2026-10-04 (+311d) |  | 0% → 90% | 24d → 55.7d |
| MOD-PWN-VC-77 | Gate Valves (225–710 mm) for Potable Water Network Zone 3 | 2025-12-07 → 2026-06-27 A (+202d) | 2025-12-20 → 2026-10-04 (+288d) |  | 0% → 90% | 0d → 57.06d |
| MOD-PWN-VC-127 | Fixing Covers, Gratings, Frames for Potable Water Network Zone 3 | 2025-12-27 → 2026-10-04 (+281d) | 2026-01-11 → 2026-10-20 (+282d) |  |  | 0d → 55.7d |
| MOD-PWN-VC-137 | Tagging & Painting for Potable Water Network Zone 3 | 2026-01-12 → 2026-10-20 (+281d) | 2026-01-18 → 2026-10-27 (+282d) |  |  | 0d → 55.7d |
| 3 | **Flow Meter Installation** | 2025-11-20 → 2026-08-12 (+265d) | 2026-01-11 → 2026-11-23 (+316d) |  |  |  |
| MOD-PWN-FM-55 | Chamber Excavation (280 mm, 300 mm, 500 mm, 800 mm) for Potable Water Network Zone 3 | 2025-11-20 → 2026-08-12 A (+265d) | 2025-11-29 → 2026-10-05 (+310d) |  | 0% → 83% | 14d → 49.56d |
| MOD-PWN-FM-65 | RC or Precast Chamber Construction for Potable Water Network Zone 3 | 2025-11-30 → 2026-09-05 A (+279d) | 2025-12-08 → 2026-10-10 (+306d) |  | 0% → 44% | 14d → 49.56d |
| MOD-PWN-FM-75 | Flowmeter Installation & Pipe Integration for Potable Water Network Zone 3 | 2025-12-18 → 2026-10-29 (+315d) | 2025-12-29 → 2026-11-10 (+316d) |  |  | 6d → 33.15d |
| MOD-PWN-FM-85 | Wiring/Cabling if applicable for Potable Water Network Zone 3 | 2025-12-30 → 2026-11-10 (+315d) | 2026-01-07 → 2026-11-19 (+316d) |  |  | 6d → 33.15d |
| MOD-PWN-FM-95 | Calibration & Commissioning for Potable Water Network Zone 3 | 2026-01-08 → 2026-11-19 (+315d) | 2026-01-11 → 2026-11-23 (+316d) |  |  | 6d → 33.15d |
| 4 | **Washout & Air Valve Chambers** | 2025-11-09 → 2026-08-01 (+265d) | 2026-01-03 → 2026-10-12 (+282d) |  |  |  |
| MOD-PWN-WA-77 | Chamber Excavation (280 mm to 710 mm) for Potable Water Network Zone 3 | 2025-11-09 → 2026-08-01 A (+265d) | 2025-11-15 → 2026-09-05 A (+294d) |  | 0% → 100% | 17d → none |
| MOD-PWN-WA-87 | RC Blinding + Base + Walls for Potable Water Network Zone 3 | 2025-11-16 → 2026-08-03 A (+260d) | 2025-11-19 → 2026-10-03 (+318d) |  | 0% → 90% | 17d → 68.6d |
| MOD-PWN-WA-97 | Pipe Work for Potable Water Network Zone 3 | 2025-11-20 → 2026-08-08 A (+261d) | 2025-12-07 → 2026-10-06 (+303d) |  | 0% → 80% | 17d → 68.6d |
| MOD-PWN-WA-107 | Washout (Valve + Outlet) Installation for Potable Water Network Zone 3 | 2025-12-08 → 2026-08-16 A (+251d) | 2025-12-16 → 2026-10-07 (+295d) |  | 0% → 80% | 17d → 68.6d |
| MOD-PWN-WA-117 | Air Valve Rooms (Valve + Outlet) Installation for Potable Water Network Zone 3 | 2025-12-22 → 2026-08-16 A (+237d) | 2025-12-28 → 2026-10-10 (+286d) |  | 0% → 80% | 13d → 68.6d |
| MOD-PWN-WA-127 | Covers, Ladders & Tags for Potable Water Network Zone 3 | 2025-12-29 → 2026-09-15 A (+260d) | 2025-12-31 → 2026-10-10 (+283d) |  | 0% → 80% | 13d → 68.6d |
| MOD-PWN-WA-137 | Backfilling & Final Finishing for Potable Water Network Zone 3 | 2026-01-01 → 2026-10-10 (+282d) | 2026-01-03 → 2026-10-12 (+282d) |  |  | 13d → 68.6d |
| 5 | **Pumping Station (Structure & Civil Works)** | 2025-10-19 → 2026-10-03 (+349d) | 2026-01-04 → 2026-12-17 (+347d) |  |  |  |
| MOD-PWN-PS-66 | Excavation & Blinding for Potable Water Network Zone 3 | 2025-10-19 → 2026-10-03 (+349d) | 2025-10-30 → 2026-10-13 (+348d) |  |  | 0.9d → 8.2d |
| MOD-PWN-PS-76 | Reinforced Concrete/GRP Shell Construction for Potable Water Network Zone 3 | 2025-10-30 → 2026-10-14 (+349d) | 2025-11-09 → 2026-10-22 (+347d) |  |  | 0.9d → 8.2d |
| MOD-PWN-PS-86 | Access Ladders, Tight Cover, Surface Guttering for Potable Water Network Zone 3 | 2025-11-09 → 2026-10-24 (+349d) | 2025-11-15 → 2026-10-28 (+347d) |  |  | 0.9d → 8.2d |
| MOD-PWN-PS-96 | Internal piping & embedded sleeves for Potable Water Network Zone 3 | 2025-11-15 → 2026-10-29 (+348d) | 2025-11-30 → 2026-11-12 (+347d) |  |  | 0.9d → 8.2d |
| MOD-PWN-PS-106 | Pump Base Pads + Grouting for Potable Water Network Zone 3 | 2025-11-30 → 2026-11-14 (+349d) | 2025-12-15 → 2026-11-28 (+348d) |  |  | 1.9d → 11.4d |
| MOD-PWN-PS-116 | Backfilling & External Finishes for Potable Water Network Zone 3 | 2025-12-15 → 2026-11-29 (+349d) | 2026-01-04 → 2026-12-17 (+347d) |  |  | 1.9d → 11.4d |
| 6 | **Pump Station Building** | 2025-11-30 → 2026-11-14 (+349d) | 2026-01-05 → 2026-12-19 (+348d) |  |  |  |
| MOD-PWN-PB-33 | Structure Construction (as per architectural drawings) for Potable Water Network Zone 3 | 2025-11-30 → 2026-11-14 (+349d) | 2025-12-15 → 2026-11-28 (+348d) |  |  | 0.9d → 8.2d |
| MOD-PWN-PB-43 | 5-ton Hoist Installation for Potable Water Network Zone 3 | 2025-12-15 → 2026-11-29 (+349d) | 2025-12-21 → 2026-12-03 (+347d) |  |  | 0.9d → 8.2d |
| MOD-PWN-PB-53 | Finishes, Doors, Ventilation for Potable Water Network Zone 3 | 2025-12-21 → 2026-12-05 (+349d) | 2026-01-05 → 2026-12-19 (+348d) |  |  | 0.9d → 8.2d |
| 7 | **Pumping Equipment & Fire Systems** | 2025-12-17 → 2026-11-14 (+332d) | 2026-01-18 → 2026-12-15 (+331d) |  |  |  |
| MOD-PWN-PE-88 | Main Pumps (250 kW, 295 L/s @ 60 m head) for Potable Water Network Zone 3 | 2025-12-17 → 2026-11-14 (+332d) | 2026-01-01 → 2026-11-29 (+332d) |  |  | 0d → 13.4d |
| MOD-PWN-PE-108 | Diesel Fire Water Pump (64 L/s @ 60 m) for Potable Water Network Zone 3 | 2026-01-03 → 2026-11-30 (+331d) | 2026-01-08 → 2026-12-06 (+332d) |  |  | 0d → 13.4d |
| MOD-PWN-PE-118 | Electric Jockey Pump for Potable Water Network Zone 3 | 2026-01-03 → 2026-11-30 (+331d) | 2026-01-08 → 2026-12-06 (+332d) |  |  | 0d → 13.4d |
| MOD-PWN-PE-128 | Submersible Fire Pumps (2 pcs, 10 L/s @ 10 m) for Potable Water Network Zone 3 | 2026-01-03 → 2026-11-30 (+331d) | 2026-01-06 → 2026-12-03 (+331d) |  |  | 0d → 13.4d |
| MOD-PWN-PE-98 | Electric Fire Water Pump (64 L/s @ 60 m) for Potable Water Network Zone 3 | 2026-01-03 → 2026-11-30 (+331d) | 2026-01-11 → 2026-12-08 (+331d) |  |  | 0d → 13.4d |
| MOD-PWN-PE-138 | Pipework connections within Pump Room for Potable Water Network Zone 3 | 2026-01-07 → 2026-12-05 (+332d) | 2026-01-12 → 2026-12-09 (+331d) |  |  | 0d → 13.4d |
| MOD-PWN-PE-148 | MCC & DB panel installation for Potable Water Network Zone 3 | 2026-01-13 → 2026-12-10 (+331d) | 2026-01-14 → 2026-12-12 (+332d) |  |  | 0d → 13.4d |
| MOD-PWN-PE-158 | Flow meter on 800mm pipe including flow meter chamber and 2-2.5m depth for Potable Water Network Zone 3 | 2026-01-15 → 2026-12-13 (+332d) | 2026-01-18 → 2026-12-15 (+331d) |  |  | 0d → 13.4d |
| 8 | **Surge Protection** | 2026-01-13 → 2026-12-10 (+331d) | 2026-01-18 → 2026-12-15 (+331d) |  |  |  |
| MOD-PWN-SP-22 | Surge Vessel Installation for Potable Water Network Zone 3 | 2026-01-13 → 2026-12-10 (+331d) | 2026-01-17 → 2026-12-14 (+331d) |  |  | 0d → 13.4d |
| MOD-PWN-SP-32 | Pipe Integration as per Surge Analysis for Potable Water Network Zone 3 | 2026-01-18 → 2026-12-15 (+331d) | 2026-01-18 → 2026-12-15 (+331d) |  |  | 0d → 13.4d |
| 9 | **Power & Generator System** | 2026-01-03 → 2026-11-30 (+331d) | 2026-01-15 → 2026-12-13 (+332d) |  |  |  |
| MOD-PWN-PG-44 | 500 kVA Standby Generator Installation for Potable Water Network Zone 3 | 2026-01-03 → 2026-11-30 (+331d) | 2026-01-06 → 2026-12-03 (+331d) |  |  | 2d → 15.4d |
| MOD-PWN-PG-54 | Canopy, Foundation & Fuel Tank for Potable Water Network Zone 3 | 2026-01-03 → 2026-11-30 (+331d) | 2026-01-08 → 2026-12-06 (+332d) |  |  | 2d → 15.4d |
| MOD-PWN-PG-64 | Electrical Cabling, Circuit Breakers for Potable Water Network Zone 3 | 2026-01-10 → 2026-12-07 (+331d) | 2026-01-13 → 2026-12-10 (+331d) |  |  | 2d → 15.4d |
| MOD-PWN-PG-74 | Earthing & Commissioning for Potable Water Network Zone 3 | 2026-01-14 → 2026-12-12 (+332d) | 2026-01-15 → 2026-12-13 (+332d) |  |  | 2d → 15.4d |
| 10 | **Chlorination System** | 2026-01-03 → 2026-11-30 (+331d) | 2026-01-18 → 2026-12-15 (+331d) |  |  |  |
| MOD-PWN-CS-33 | Chlorination Device Supply & Installation for Potable Water Network Zone 3 | 2026-01-03 → 2026-11-30 (+331d) | 2026-01-10 → 2026-12-07 (+331d) |  |  | 0d → 13.4d |
| MOD-PWN-CS-43 | Connections to Main Line or Disinfection Chamber for Potable Water Network Zone 3 | 2026-01-11 → 2026-12-08 (+331d) | 2026-01-14 → 2026-12-12 (+332d) |  |  | 0d → 13.4d |
| MOD-PWN-CS-53 | Control Integration for Potable Water Network Zone 3 | 2026-01-15 → 2026-12-13 (+332d) | 2026-01-18 → 2026-12-15 (+331d) |  |  | 0d → 13.4d |
| 11 | **Water Storage System** | 2026-01-05 → 2025-10-13 (-84d) | 2026-01-18 → 2026-12-22 (+338d) |  |  |  |
| MOD-PWN-WS-11 | Structural tanks for supply or pressure equalization for Potable Water Network Zone 3 | 2026-01-05 → 2025-10-13 A (-84d) | 2026-01-18 → 2026-12-22 (+338d) |  | 0% → 80% | 0.9d → 8.2d |

| ID | Task | Start | Finish | Complete | Total float |
| --- | --- | --- | --- | --- | --- |
| 12 | **Street Lighting** | 2025-12-15 → 2025-12-05 (-10d) | 2026-01-18 → 2026-12-07 (+323d) |  |  |
| MOD-PWN-SL-55 | Excavation for Poles for Potable Water Network Zone 3 | 2025-12-15 → 2025-12-05 A (-10d) | 2025-12-22 → 2026-04-01 A (+100d) | 0% → 100% | 1.9d → none |
| MOD-PWN-SL-75 | Pole & Fixture Installation for Potable Water Network Zone 3 | 2025-12-24 → 2025-12-13 A (-11d) | 2026-01-11 → 2026-11-30 (+323d) | 0% → 90% | 0d → 20.8d |
| MOD-PWN-SL-65 | Conduits, Cabling, Backfilling for Potable Water Network Zone 3 | 2025-12-22 → 2025-12-15 A (-7d) | 2026-01-05 → 2026-11-30 (+329d) | 0% → 90% | 1.9d → 20.8d |
| MOD-PWN-SL-85 | Connection to Main Supply for Potable Water Network Zone 3 | 2026-01-12 → 2026-11-30 (+322d) | 2026-01-18 → 2026-12-07 (+323d) |  | 0d → 20.8d |
| MOD-PWN-SL-95 | Testing & Lighting Commissioning for Potable Water Network Zone 3 | 2026-01-12 → 2026-11-30 (+322d) | 2026-01-18 → 2026-12-07 (+323d) |  | 0d → 20.8d |
| 6 | **Irrigation Network Zone 3** | 2025-10-19 → 2026-03-21 (+153d) | 2026-01-11 → 2026-11-15 (+308d) |  |  |
| 1 | **Excavation, Pipe Laying & Backfilling** | 2025-10-19 → 2026-04-01 (+164d) | 2025-12-14 → 2026-10-09 (+299d) |  |  |
| MOD-IRN-EB-120 | Trench Excavation for Irrigation Network Zone 3 | 2025-10-19 → 2026-04-01 A (+164d) | 2025-11-08 → 2026-10-05 (+331d) | 0% → 90% | 35d → 82.48d |
| MOD-IRN-EB-130 | Lean Concrete / Pipe Bedding with Type B Material for Irrigation Network Zone 3 | 2025-11-09 → 2026-04-04 A (+146d) | 2025-11-17 → 2026-10-05 (+322d) | 0% → 90% | 35d → 82.48d |
| MOD-IRN-EB-140 | HDPE Pipe Laying (125 mm to 630 mm) for Irrigation Network Zone 3 | 2025-11-18 → 2026-04-07 A (+140d) | 2025-12-08 → 2026-10-08 (+304d) | 0% → 90% | 35d → 82.48d |
| MOD-IRN-EB-150 | Test (Pressure-slope) for Irrigation Network Zone 3 | 2025-12-09 → 2026-05-01 A (+143d) | 2025-12-10 → 2026-10-08 (+302d) | 0% → 82% | 35d → 82.48d |
| MOD-IRN-EB-180 | Coating / Wrapping for Irrigation Network Zone 3 | 2025-12-11 → 2026-06-01 A (+172d) | 2025-12-12 → 2026-10-08 (+300d) | 0% → 82% | 35d → 82.48d |
| MOD-IRN-EB-190 | Backfilling & Warrning Tape for Irrigation Network Zone 3 | 2025-12-13 → 2026-07-13 A (+212d) | 2025-12-14 → 2026-10-09 (+299d) | 0% → 50% | 35d → 82.48d |
| 2 | **Valves and Appurtenances** | 2025-12-07 → 2026-06-14 (+189d) | 2025-12-28 → 2026-10-06 (+282d) |  |  |
| MOD-IRN-VA-55 | Supply & Installation of Valves (Gate Valve) for Irrigation Network Zone 3 | 2025-12-07 → 2026-06-14 A (+189d) | 2025-12-15 → 2026-09-01 A (+260d) | 0% → 100% | 7d → none |
| MOD-IRN-VA-65 | Supply & Installation of Valves (Butterfly Valve) for Irrigation Network Zone 3 | 2025-12-11 → 2026-06-20 A (+191d) | 2025-12-20 → 2026-10-04 (+288d) | 0% → 80% | 14d → 74d |
| MOD-IRN-VA-75 | Installation of Flanges, Bolts, Collars, Nuts for Irrigation Network Zone 3 | 2025-12-21 → 2026-06-21 A (+182d) | 2025-12-23 → 2026-10-05 (+286d) | 0% → 80% | 18d → 74d |
| MOD-IRN-VA-85 | Valve Pressure Testing for Irrigation Network Zone 3 | 2025-12-24 → 2026-07-06 A (+194d) | 2025-12-25 → 2026-10-05 (+284d) | 0% → 80% | 18d → 74d |
| MOD-IRN-VA-95 | Support Brackets/Anchor Blocks for Irrigation Network Zone 3 | 2025-12-27 → 2026-07-07 A (+192d) | 2025-12-28 → 2026-10-06 (+282d) | 0% → 60% | 18d → 74d |
| 3 | **Valve Rooms** | 2025-12-11 → 2026-05-01 (+141d) | 2026-01-01 → 2026-10-03 (+275d) |  |  |
| MOD-IRN-VR-77 | Excavation for Valve Room Valve Chamber for Irrigation Network Zone 3 | 2025-12-11 → 2026-05-01 A (+141d) | 2025-12-14 → 2026-05-31 A (+168d) | 0% → 100% | 14d → none |
| MOD-IRN-VR-87 | Blinding Concrete Valve Chamber for Irrigation Network Zone 3 | 2025-12-15 → 2026-05-12 A (+148d) | 2025-12-16 → 2026-06-30 A (+196d) | 0% → 100% | 14d → none |
| MOD-IRN-VR-97 | RCC Base Slab & Chamber Walls Valve Chamber for Irrigation Network Zone 3 | 2025-12-17 → 2026-05-19 A (+153d) | 2025-12-20 → 2026-07-01 A (+193d) | 0% → 100% | 14d → none |
| MOD-IRN-VR-107 | Block Wall Construction (if any) Valve Chamber for Irrigation Network Zone 3 | 2025-12-21 → 2026-05-24 A (+154d) | 2025-12-25 → 2026-07-02 A (+189d) | 0% → 100% | 14d → none |
| MOD-IRN-VR-117 | Installation of Valve inside the Room Valve Chamber for Irrigation Network Zone 3 | 2025-12-27 → 2026-07-01 A (+186d) | 2025-12-28 → 2026-07-08 A (+192d) | 0% → 100% | 14d → none |
| MOD-IRN-VR-127 | Fixing Frame & Cover Valve Chamber for Irrigation Network Zone 3 | 2025-12-29 → 2026-07-02 A (+185d) | 2025-12-30 → 2026-07-09 A (+191d) | 0% → 100% | 14d → none |
| MOD-IRN-VR-137 | Backfilling and Finishing Valve Chamber for Irrigation Network Zone 3 | 2025-12-31 → 2026-07-11 A (+192d) | 2026-01-01 → 2026-10-03 (+275d) | 0% → 85% | 14d → 77.1d |
| 4 | **Washout Chambers** | 2025-12-07 → 2026-04-13 (+127d) | 2026-01-08 → 2026-10-04 (+269d) |  |  |
| MOD-IRN-WC-66 | Excavation for Chamber Washout Chamber for Irrigation Network Zone 3 | 2025-12-07 → 2026-04-13 A (+127d) | 2025-12-11 → 2026-05-30 A (+170d) | 0% → 100% | 7d → none |
| MOD-IRN-WC-76 | Blinding Concrete Washout Chamber for Irrigation Network Zone 3 | 2025-12-13 → 2026-04-22 A (+130d) | 2025-12-15 → 2026-06-17 A (+184d) | 0% → 100% | 8d → none |
| MOD-IRN-WC-86 | Construction of RCC Base & Chamber Wall Washout Chamber for Irrigation Network Zone 3 | 2025-12-16 → 2026-04-30 A (+135d) | 2025-12-24 → 2026-06-23 A (+181d) | 0% → 100% | 8d → none |
| MOD-IRN-WC-96 | Washout Valve & Pipe Connection Washout Chamber for Irrigation Network Zone 3 | 2025-12-25 → 2026-06-16 A (+173d) | 2025-12-30 → 2026-10-03 (+277d) | 0% → 90% | 8d → 76.1d |
| MOD-IRN-WC-106 | Manhole Frame, Cover & Ladder Fixing Washout Chamber for Irrigation Network Zone 3 | 2025-12-31 → 2026-06-22 A (+173d) | 2026-01-03 → 2026-10-03 (+273d) | 0% → 90% | 8d → 76.1d |
| MOD-IRN-WC-116 | Backfilling & Reinstatement Washout Chamber for Irrigation Network Zone 3 | 2026-01-04 → 2026-07-06 A (+183d) | 2026-01-08 → 2026-10-04 (+269d) | 0% → 90% | 8d → 76.1d |
| 5 | **Air Valve Chambers** | 2025-12-07 → 2026-03-21 (+104d) | 2026-01-06 → 2026-10-03 (+270d) |  |  |
| MOD-IRN-AC-55 | Chamber Excavation Air Valve Chamber for Irrigation Network Zone 3 | 2025-12-07 → 2026-03-21 A (+104d) | 2025-12-13 → 2026-05-31 A (+169d) | 0% → 100% | 7d → none |
| MOD-IRN-AC-65 | Blinding & RCC Base Air Valve Chamber for Irrigation Network Zone 3 | 2025-12-14 → 2026-03-26 A (+102d) | 2025-12-20 → 2026-06-23 A (+185d) | 0% → 100% | 10d → none |
| MOD-IRN-AC-75 | Wall Casting / Blockwork Air Valve Chamber for Irrigation Network Zone 3 | 2025-12-21 → 2026-03-31 A (+100d) | 2025-12-29 → 2026-06-24 A (+177d) | 0% → 100% | 10d → none |
| MOD-IRN-AC-85 | Air Valve Installation (280–630 mm) Air Valve Chamber for Irrigation Network Zone 3 | 2025-12-30 → 2026-04-29 A (+120d) | 2026-01-04 → 2026-07-01 A (+178d) | 0% → 100% | 10d → none |
| MOD-IRN-AC-95 | Cover Fixing & Finishing Air Valve Chamber for Irrigation Network Zone 3 | 2026-01-05 → 2026-06-23 A (+169d) | 2026-01-06 → 2026-10-03 (+270d) | 0% → 95% | 10d → 77.3d |
| 6 | **Flow Meter Chambers** | 2025-12-07 → 2026-04-01 (+115d) | 2026-01-11 → 2026-11-15 (+308d) |  |  |
| MOD-IRN-FC-66 | Chamber Excavation Flow Meter Chamber for Irrigation Network Zone 3 | 2025-12-07 → 2026-04-01 A (+115d) | 2025-12-11 → 2026-06-29 A (+200d) | 0% → 100% | 7d → none |
| MOD-IRN-FC-76 | RCC Base & Wall Construction Flow Meter Chamber for Irrigation Network Zone 3 | 2025-12-13 → 2026-05-27 A (+165d) | 2025-12-16 → 2026-10-03 (+291d) | 0% → 75% | 7d → 62d |
| MOD-IRN-FC-86 | Flow Meter Installation (280, 300, 500 mm) Flow Meter Chamber for Irrigation Network Zone 3 | 2025-12-18 → 2026-07-01 A (+195d) | 2025-12-24 → 2026-11-01 (+312d) | 0% → 60% | 6d → 39.75d |
| MOD-IRN-FC-96 | Integration with Pipework Flow Meter Chamber for Irrigation Network Zone 3 | 2025-12-25 → 2026-07-02 A (+189d) | 2025-12-30 → 2026-11-03 (+308d) | 0% → 60% | 6d → 39.75d |
| MOD-IRN-FC-106 | Testing & Calibration Flow Meter Chamber for Irrigation Network Zone 3 | 2025-12-31 → 2026-11-03 (+307d) | 2026-01-06 → 2026-11-10 (+308d) |  | 6d → 39.75d |
| MOD-IRN-FC-116 | Cover and Access Arrangement Flow Meter Chamber for Irrigation Network Zone 3 | 2026-01-07 → 2026-11-10 (+307d) | 2026-01-11 → 2026-11-15 (+308d) |  | 6d → 39.75d |
| 7 | **Rainwater Collection Ponds Zone 3** | 2026-01-19 → 2025-09-15 (-126d) | 2026-11-14 → 2027-03-20 (+126d) |  |  |
| 10 | **Excavation for Rainwater Drainage Pond** | 2026-01-19 → 2025-10-01 (-110d) | 2026-03-14 → 2027-01-09 (+301d) |  |  |
| 11 | **Deep excavation, backfill, disposal for pond formation** | 2026-01-19 → 2025-10-01 (-110d) | 2026-03-14 → 2027-01-09 (+301d) |  |  |
| MOD-RCP-ER-78 | Mark and fence pond boundary for Rainwater Collection Ponds Zone 3 | 2026-01-19 → 2025-10-01 A (-110d) | 2026-01-21 → 2025-10-04 A (-109d) | 0% → 100% | 38.8d → none |
| MOD-RCP-ER-88 | Excavate in layers to final depth for Rainwater Collection Ponds Zone 3 | 2026-01-22 → 2025-10-04 A (-110d) | 2026-02-04 → 2027-01-02 (+332d) | 0% → 90% | 338.8d → 91.8d |
| MOD-RCP-ER-98 | Dewater during excavation for Rainwater Collection Ponds Zone 3 | 2026-02-05 → 2026-03-01 A (+24d) | 2026-02-10 → 2027-01-03 (+327d) | 0% → 80% | 338.8d → 91.8d |
| MOD-RCP-ER-108 | Place warning tapes for Rainwater Collection Ponds Zone 3 | 2026-02-11 → 2026-07-01 A (+140d) | 2026-02-19 → 2027-01-04 (+319d) | 0% → 80% | 338.8d → 91.8d |
| MOD-RCP-ER-118 | Dispose of rock/materials to approved dump area for Rainwater Collection Ponds Zone 3 | 2026-02-19 → 2026-08-10 A (+172d) | 2026-03-05 → 2027-01-06 (+307d) | 0% → 80% | 338.8d → 91.8d |
| MOD-RCP-ER-128 | Backfill selected areas as per design for Rainwater Collection Ponds Zone 3 | 2026-03-07 → 2026-09-01 A (+178d) | 2026-03-10 → 2027-01-06 (+302d) | 0% → 80% | 338.8d → 91.8d |
| MOD-RCP-ER-138 | Final trimming and profiling for Rainwater Collection Ponds Zone 3 | 2026-03-10 → 2027-01-06 (+302d) | 2026-03-14 → 2027-01-09 (+301d) |  | 338.8d → 91.8d |
| 1 | **General Site Preparation** | 2026-01-22 → 2025-09-15 (-129d) | 2026-05-10 → 2027-01-05 (+240d) |  |  |
| MOD-RCP-GS-123 | Site demarcation for Rainwater Collection Ponds Zone 3 | 2026-01-22 → 2025-09-15 A (-129d) | 2026-02-08 → 2025-10-20 A (-111d) | 0% → 100% | 66.8d → none |
| MOD-RCP-GS-133 | Clearing and grubbing for Rainwater Collection Ponds Zone 3 | 2026-02-09 → 2025-09-15 A (-147d) | 2026-03-16 → 2025-10-20 A (-147d) | 0% → 100% | 66.8d → none |
| MOD-RCP-GS-183 | Earthwork excavation (other than topsoil or rock) - Zone 3 (3 Ponds) for Rainwater Collection Ponds Zone 3 | 2026-03-16 → 2025-10-12 A (-155d) | 2026-04-15 → 2027-01-03 (+263d) | 0% → 90% | 66.8d → 32.35d |
| MOD-RCP-GS-193 | Transport and disposal to approved locations - Zone 3 (3 Ponds) for Rainwater Collection Ponds Zone 3 | 2026-04-15 → 2025-12-06 A (-130d) | 2026-05-10 → 2027-01-05 (+240d) | 0% → 90% | 139.8d → 47.6d |
| 2 | **Backfilling Works** | 2026-05-10 → 2025-11-18 (-173d) | 2026-07-29 → 2027-01-21 (+176d) |  |  |
| MOD-RCP-BW-75 | Compact each layer to required density for Rainwater Collection Ponds Zone 3 | 2026-06-25 → 2025-11-18 A (-219d) | 2026-07-19 → 2027-01-14 (+179d) | 0% → 80% | 230.8d → 80.98d |
| MOD-RCP-BW-65 | Place in layers not exceeding 300mm for Rainwater Collection Ponds Zone 3 | 2026-06-01 → 2025-11-29 A (-184d) | 2026-06-25 → 2027-01-10 (+199d) | 0% → 88% | 230.8d → 80.98d |
| MOD-RCP-BW-55 | Select material from excavation or import approved material for Rainwater Collection Ponds Zone 3 | 2026-05-10 → 2025-12-11 A (-150d) | 2026-06-01 → 2027-01-07 (+220d) | 0% → 90% | 139.8d → 47.6d |
| MOD-RCP-BW-85 | Conduct field density tests for Rainwater Collection Ponds Zone 3 | 2026-07-19 → 2026-08-01 A (+13d) | 2026-07-23 → 2027-01-16 (+177d) | 0% → 80% | 230.8d → 80.98d |
| MOD-RCP-BW-95 | Final leveling and approval for Rainwater Collection Ponds Zone 3 | 2026-07-23 → 2027-01-16 (+177d) | 2026-07-29 → 2027-01-21 (+176d) |  | 230.8d → 80.98d |
| 12 | **Geotextile & Bedding** | 2026-06-01 → 2026-01-12 (-140d) | 2026-08-17 → 2027-03-20 (+215d) |  |  |

| ID | Task | Start | Finish | Duration | Complete | Total float |
| --- | --- | --- | --- | --- | --- | --- |
| 13 | **Installation of geotextile lining and coarse sand bedding** | 2026-06-01 → 2026-01-12 (-140d) | 2026-08-17 → 2027-03-20 (+215d) |  |  |  |
| MOD-RCP-GB-45 | Trim subgrade to required level for Rainwater Collection Ponds Zone 3 | 2026-06-01 → 2026-01-12 A (-140d) | 2026-06-09 → 2027-01-09 (+214d) |  | 0% → 80% | 139.8d → 47.6d |
| MOD-RCP-GB-55 | Lay HDPE geotextile membrane over compacted soil for Rainwater Collection Ponds Zone 3 | 2026-06-09 → 2026-01-29 A (-131d) | 2026-07-04 → 2027-01-16 (+196d) |  | 0% → 70% | 139.8d → 47.6d |
| MOD-RCP-GB-65 | Place 500mm thick coarse sand bedding for Rainwater Collection Ponds Zone 3 | 2026-07-04 → 2027-01-17 (+197d) | 2026-07-28 → 2027-02-11 (+198d) |  |  | 139.8d → 47.6d |
| MOD-RCP-GB-75 | Compact and level bedding for Rainwater Collection Ponds Zone 3 | 2026-07-28 → 2027-02-13 (+200d) | 2026-08-17 → 2027-03-20 (+215d) |  |  | 139.8d → 47.6d |
| 3 | **Concrete Structures** | 2026-08-17 → 2026-04-07 (-132d) | 2026-10-10 → 2026-11-26 (+47d) |  |  |  |
| 4 | **Construction of pond slab, walls, vertical structures** | 2026-08-17 → 2026-04-07 (-132d) | 2026-10-10 → 2026-11-26 (+47d) |  |  |  |
| MOD-RCP-CS-100 | Clean the subgrade for Rainwater Collection Ponds Zone 3 | 2026-08-17 → 2026-04-07 A (-132d) | 2026-08-19 → 2026-04-11 A (-130d) |  | 0% → 100% | 139.8d → none |
| MOD-RCP-CS-110 | Lay 100mm thick blinding (C15) for Rainwater Collection Ponds Zone 3 | 2026-08-19 → 2026-04-12 A (-129d) | 2026-08-23 → 2026-04-16 A (-129d) |  | 0% → 100% | 139.8d → none |
| MOD-RCP-CS-120 | Install formwork and reinforcement for Rainwater Collection Ponds Zone 3 | 2026-08-23 → 2026-04-13 A (-132d) | 2026-09-01 → 2026-04-20 A (-134d) |  | 0% → 100% | 139.8d → none |
| MOD-RCP-CS-130 | Cast base slab with C20 concrete (300–500mm thick) for Rainwater Collection Ponds Zone 3 | 2026-09-01 → 2026-04-18 A (-136d) | 2026-09-06 → 2026-04-25 A (-134d) |  | 0% → 100% | 139.8d → none |
| MOD-RCP-CS-140 | Construct sub-walls (150–300mm thick) for Rainwater Collection Ponds Zone 3 | 2026-09-06 → 2026-04-22 A (-137d) | 2026-09-14 → 2026-04-30 A (-137d) |  | 0% → 100% | 139.8d → none |
| MOD-RCP-CS-150 | Construct vertical structures (0.2–1.22m wide) for Rainwater Collection Ponds Zone 3 | 2026-09-14 → 2026-05-02 A (-135d) | 2026-09-26 → 2026-05-12 A (-137d) |  | 0% → 100% | 139.8d → none |
| MOD-RCP-CS-160 | Remove formwork after curing for Rainwater Collection Ponds Zone 3 | 2026-09-26 → 2026-05-05 A (-144d) | 2026-09-29 → 2026-05-14 A (-138d) |  | 0% → 100% | 169.8d → none |
| MOD-RCP-CS-170 | Apply power floating finish for Rainwater Collection Ponds Zone 3 | 2026-09-29 → 2026-05-12 A (-140d) | 2026-10-01 → 2026-05-18 A (-136d) |  | 0% → 100% | 169.8d → none |
| MOD-RCP-CS-180 | Apply waterproofing, bitumen, screed, perimeter lining for Rainwater Collection Ponds Zone 3 | 2026-10-01 → 2026-05-16 A (-138d) | 2026-10-10 → 2026-11-26 A (+47d) |  | 0% → 100% | 169.8d → none |
| 5 | **Energy Dissipation & Siphon Structures** | 2026-09-26 → 2025-11-18 (-312d) | 2026-11-14 → 2026-12-01 (+17d) |  |  |  |
| 6 | **Siphon pipes, energy dissipators, and associated civil works** | 2026-09-26 → 2025-11-18 (-312d) | 2026-11-14 → 2026-12-01 (+17d) |  |  |  |
| MOD-RCP-ED-78 | Excavate for low-level areas for Rainwater Collection Ponds Zone 3 | 2026-09-26 → 2025-11-18 A (-312d) | 2026-09-29 → 2026-12-01 A (+63d) |  | 0% → 100% | 139.8d → none |
| MOD-RCP-ED-88 | Lay granular bedding and compact for Rainwater Collection Ponds Zone 3 | 2026-09-29 → 2025-11-22 A (-311d) | 2026-10-12 → 2025-11-29 A (-317d) |  | 0% → 100% | 139.8d → none |
| MOD-RCP-ED-98 | Install siphon pipe with DI 90° bends for Rainwater Collection Ponds Zone 3 | 2026-10-12 → 2025-11-25 A (-321d) | 2026-10-24 → 2025-11-30 A (-328d) |  | 0% → 100% | 139.8d → none |
| MOD-RCP-ED-108 | Place coarse gravel tamping for Rainwater Collection Ponds Zone 3 | 2026-10-24 → 2025-12-01 A (-327d) | 2026-11-02 → 2025-12-09 A (-328d) |  | 0% → 100% | 139.8d → none |
| MOD-RCP-ED-118 | Construct reinforced concrete side walls for Rainwater Collection Ponds Zone 3 | 2026-11-02 → 2026-01-06 A (-300d) | 2026-11-09 → 2026-01-11 A (-302d) |  | 0% → 100% | 139.8d → none |
| MOD-RCP-ED-128 | Brickwork and finishing for Rainwater Collection Ponds Zone 3 | 2026-11-09 → 2026-01-12 A (-301d) | 2026-11-11 → 2026-01-15 A (-300d) |  | 0% → 100% | 139.8d → none |
| MOD-RCP-ED-138 | Install energy dissipators (gabion baffles, riprap) for Rainwater Collection Ponds Zone 3 | 2026-11-11 → 2026-01-14 A (-301d) | 2026-11-14 → 2026-01-20 A (-298d) |  | 0% → 100% | 139.8d → none |
| 8 | **Road Crossing Zone 3** | 2026-01-22 → 2026-04-01 (+69d) | 2026-10-13 → 2027-06-30 (+260d) |  |  |  |
| 14 | **uPVC Road Crossing Pipes** | 2026-01-22 → 2026-04-01 (+69d) | 2026-06-22 → 2027-02-24 (+247d) |  |  |  |
| 15 | **Installation of uPVC pipes of various diameters crossing roadways** | 2026-01-22 → 2026-04-01 (+69d) | 2026-06-22 → 2027-02-24 (+247d) |  |  |  |
| MOD-ROC-PV-002 | Demarcation and traffic diversion (if required) for Road Crossing Zone 3 | 2026-01-22 → 2026-04-01 A (+69d) | 2026-01-28 → 2026-05-31 A (+123d) | 6d → 5d | 0% → 100% | 38.8d → none |
| MOD-ROC-PV-005 | Preparation of trench base with compacted bedding for Road Crossing Zone 3 | 2026-03-26 → 2026-04-01 A (+6d) | 2026-04-13 → 2027-01-10 (+272d) | 15d → 10d | 0% → 60% | 38.8d → -134.66d |
| MOD-ROC-PV-006 | Laying of uPVC pipe (300mm, 315mm, 400mm, 600mm dia) for Road Crossing Zone 3 | 2026-04-13 → 2026-05-01 A (+18d) | 2026-05-07 → 2027-01-16 (+254d) | 21d → 10d | 0% → 50% | 38.8d → -134.66d |
| MOD-ROC-PV-003 | Saw cutting and removal of asphalt (if applicable) for Road Crossing Zone 3 | 2026-01-29 → 2026-05-18 A (+109d) | 2026-02-11 → 2026-06-01 A (+110d) | 12d → 5d | 0% → 100% | 38.8d → none |
| MOD-ROC-PV-004 | Excavation across road width to required depth for Road Crossing Zone 3 | 2026-02-12 → 2026-06-09 A (+117d) | 2026-03-26 → 2027-01-05 (+285d) | 21d → 10d | 0% → 60% | 38.8d → -134.66d |
| MOD-ROC-PV-007 | Placement of supports and protection around the pipe for Road Crossing Zone 3 | 2026-05-07 → 2027-01-16 (+254d) | 2026-05-19 → 2027-01-21 (+247d) | 10d → 5d |  | 38.8d → -134.66d |
| MOD-ROC-PV-008 | Testing of installed pipeline for Road Crossing Zone 3 | 2026-05-19 → 2027-01-21 (+247d) | 2026-05-26 → 2027-01-28 (+247d) |  |  | 38.8d → -134.66d |
| MOD-ROC-PV-009 | Backfilling and compaction in layers for Road Crossing Zone 3 | 2026-05-26 → 2027-01-28 (+247d) | 2026-06-15 → 2027-02-11 (+241d) | 13d → 10d |  | 38.8d → -134.66d |
| MOD-ROC-PV-010 | Reinstatement of road surface for Road Crossing Zone 3 | 2026-06-15 → 2027-02-11 (+241d) | 2026-06-22 → 2027-02-24 (+247d) |  |  | 38.8d → -134.66d |
| 16 | **GRP Road Crossing Pipes** | 2026-06-22 → 2027-02-24 (+247d) | 2026-10-13 → 2027-06-30 (+260d) |  |  |  |
| 17 | **Installation of GRP pipes (800mm–1000mm dia) for road crossings** | 2026-06-22 → 2027-02-24 (+247d) | 2026-10-13 → 2027-06-30 (+260d) |  |  |  |
| MOD-ROC-GR-002 | Set out location and coordinate with road authority for Road Crossing Zone 3 | 2026-06-22 → 2027-02-24 (+247d) | 2026-06-28 → 2027-03-06 (+251d) |  |  | 166.8d → -37d |
| MOD-ROC-GR-003 | Excavate trench across road at designed depth for Road Crossing Zone 3 | 2026-06-28 → 2027-03-06 (+251d) | 2026-07-12 → 2027-03-25 (+256d) |  |  | 166.8d → -37d |
| MOD-ROC-GR-004 | Lay compacted granular bedding for Road Crossing Zone 3 | 2026-07-12 → 2027-03-27 (+258d) | 2026-07-30 → 2027-04-13 (+257d) |  |  | 166.8d → -37d |
| MOD-ROC-GR-005 | Install GRP pipe (800mm & 1000mm dia) for Road Crossing Zone 3 | 2026-07-30 → 2027-04-14 (+258d) | 2026-08-24 → 2027-05-08 (+257d) |  |  | 166.8d → -37d |
| MOD-ROC-GR-006 | Provide structural supports and closure at both ends for Road Crossing Zone 3 | 2026-08-24 → 2027-05-09 (+258d) | 2026-09-03 → 2027-05-23 (+262d) |  |  | 166.8d → -37d |
| MOD-ROC-GR-007 | Perform leak testing as per specifications for Road Crossing Zone 3 | 2026-09-03 → 2027-05-24 (+263d) | 2026-09-09 → 2027-05-29 (+262d) |  |  | 166.8d → -37d |
| MOD-ROC-GR-008 | Backfill and compact in layers for Road Crossing Zone 3 | 2026-09-09 → 2027-05-30 (+263d) | 2026-09-28 → 2027-06-15 (+260d) |  |  | 166.8d → -37d |
| MOD-ROC-GR-009 | Reinstate road surface (asphalt/concrete) for Road Crossing Zone 3 | 2026-09-28 → 2027-06-16 (+261d) | 2026-10-07 → 2027-06-24 (+260d) |  |  | 166.8d → -37d |
| MOD-ROC-GR-010 | Final inspection and approval by relevant authority for Road Crossing Zone 3 | 2026-10-07 → 2027-06-26 (+262d) | 2026-10-13 → 2027-06-30 (+260d) |  |  | 166.8d → -37d |
| 8 | **Zone 2** | 2025-10-19 → 2025-10-15 (-4d) | 2026-12-08 → 2027-08-02 (+237d) |  |  |  |
| 5 | **Sewerage Network Zone 2** | 2025-10-19 → 2026-01-04 (+77d) | 2026-03-04 → 2026-12-08 (+279d) |  |  |  |
| 1 | **Pipework: Supply, Installation, and Testing** | 2025-10-19 → 2026-01-04 (+77d) | 2026-02-03 → 2026-11-25 (+295d) |  |  |  |
| 1 | **UPVC Pipes Installation (150mm–315mm)** | 2025-10-19 → 2026-01-04 (+77d) | 2026-01-26 → 2026-04-15 (+79d) |  |  |  |
| MOD-SWN-PW-485 | Excavation and Trenching UPVC for Sewerage Network Zone 2 | 2025-10-19 → 2026-01-04 A (+77d) | 2025-11-08 → 2026-03-03 A (+115d) |  | 0% → 100% | 376.8d → none |
| MOD-SWN-PW-495 | Lean Concrete / Bedding UPVC for Sewerage Network Zone 2 | 2025-11-09 → 2026-01-08 A (+60d) | 2025-11-29 → 2026-03-23 A (+114d) |  | 0% → 100% | 376.8d → none |
| MOD-SWN-PW-445 | UPVC Pipes Installation (150mm–315mm) UPVC for Sewerage Network Zone 2 | 2025-11-30 → 2026-03-01 A (+91d) | 2025-12-12 → 2026-03-26 A (+104d) |  | 0% → 100% | 376.8d → none |
| MOD-SWN-PW-505 | Test (Pressure - Slope) UPVC for Sewerage Network Zone 2 | 2025-12-13 → 2026-03-17 A (+94d) | 2025-12-27 → 2026-04-01 A (+95d) |  | 0% → 100% | 384.8d → none |
| MOD-SWN-PW-515 | Coating / Wrapping UPVC for Sewerage Network Zone 2 | 2025-12-28 → 2026-04-01 A (+94d) | 2026-01-11 → 2026-04-08 A (+87d) |  | 0% → 100% | 384.8d → none |
| MOD-SWN-PW-475 | Backfilling & Warrning Tape UPVC for Sewerage Network Zone 2 | 2026-01-12 → 2026-04-08 A (+86d) | 2026-01-26 → 2026-04-15 A (+79d) |  | 0% → 100% | 384.8d → none |
| 2 | **GRP Pipes Installation (400mm–700mm)** | 2025-10-19 → 2026-01-05 (+78d) | 2026-02-03 → 2026-04-06 (+62d) |  |  |  |
| MOD-SWN-PW-535 | Excavation and Trenching GRP for Sewerage Network Zone 2 | 2025-10-19 → 2026-01-05 A (+78d) | 2025-11-08 → 2026-02-05 A (+89d) |  | 0% → 100% | 376.8d → none |
| MOD-SWN-PW-545 | Lean Concrete / Bedding GRP for Sewerage Network Zone 2 | 2025-11-09 → 2026-01-13 A (+65d) | 2025-11-29 → 2026-02-18 A (+81d) |  | 0% → 100% | 376.8d → none |
| MOD-SWN-PW-455 | GRP Pipes Installation (400mm–700mm) GRP for Sewerage Network Zone 2 | 2025-11-30 → 2026-02-01 A (+63d) | 2025-12-20 → 2026-02-18 A (+60d) |  | 0% → 100% | 376.8d → none |
| MOD-SWN-PW-555 | Test (Pressure - Slope) GRP for Sewerage Network Zone 2 | 2025-12-21 → 2026-02-19 A (+60d) | 2026-01-04 → 2026-02-28 A (+55d) |  | 0% → 100% | 376.8d → none |
| MOD-SWN-PW-565 | Coating / Wrapping GRP for Sewerage Network Zone 2 | 2026-01-05 → 2026-02-28 A (+54d) | 2026-01-19 → 2026-04-01 A (+72d) |  | 0% → 100% | 376.8d → none |
| MOD-SWN-PW-525 | Backfilling & Warrning Tape GRP for Sewerage Network Zone 2 | 2026-01-20 → 2026-03-03 A (+42d) | 2026-02-03 → 2026-04-06 A (+62d) |  | 0% → 100% | 376.8d → none |
| 3 | **HDPE Pressure Pipes Installation (250mm–630mm)** | 2025-10-19 → 2026-01-11 (+84d) | 2026-02-03 → 2026-11-25 (+295d) |  |  |  |
| MOD-SWN-PW-585 | Excavation and Trenching HDPE for Sewerage Network Zone 2 | 2025-10-19 → 2026-01-11 A (+84d) | 2025-11-08 → 2026-10-07 (+333d) |  | 0% → 80% | 376.8d → 94.1d |
| MOD-SWN-PW-595 | Lean Concrete / Bedding HDPE for Sewerage Network Zone 2 | 2025-11-09 → 2026-01-15 A (+67d) | 2025-11-29 → 2026-10-15 (+320d) |  | 0% → 60% | 376.8d → 94.1d |
| MOD-SWN-PW-465 | HDPE Pressure Pipes Installation (250mm–630mm) HDPE for Sewerage Network Zone 2 | 2025-11-30 → 2026-02-09 A (+71d) | 2025-12-20 → 2026-10-26 (+310d) |  | 0% → 50% | 376.8d → 94.1d |
| MOD-SWN-PW-605 | Test (Pressure - Slope) HDPE for Sewerage Network Zone 2 | 2025-12-21 → 2026-03-16 A (+85d) | 2026-01-04 → 2026-11-02 (+302d) |  | 0% → 50% | 376.8d → 112.7d |

| ID | Task | Start | Finish | Complete | Total float |
| --- | --- | --- | --- | --- | --- |
| MOD-SWN-PW-615 | Coating / Wrapping HDPE for Sewerage Network Zone 2 | 2026-01-05 → 2026-03-21 A (+75d) | 2026-01-19 → 2026-11-10 (+295d) | 0% → 44% | 376.8d → 112.7d |
| MOD-SWN-PW-575 | Backfilling & Warrning Tape HDPE for Sewerage Network Zone 2 | 2026-01-20 → 2026-11-11 (+295d) | 2026-02-03 → 2026-11-25 (+295d) |  | 376.8d → 112.7d |
| 2 | **Fittings and Valves** | 2025-12-21 → 2026-10-26 (+309d) | 2026-01-20 → 2026-11-26 (+310d) |  |  |
| MOD-SWN-FV-5 | Supply & Installation of HDPE Elbows for Sewerage Network Zone 2 | 2025-12-21 → 2026-10-26 (+309d) | 2025-12-27 → 2026-11-02 (+310d) |  | 310.8d → 81.1d |
| MOD-SWN-FV-15 | Gate Valves Installation for Sewerage Network Zone 2 | 2025-12-28 → 2026-11-02 (+309d) | 2025-12-31 → 2026-11-07 (+311d) |  | 310.8d → 81.1d |
| MOD-SWN-FV-25 | Drain Valves Installation for Sewerage Network Zone 2 | 2026-01-01 → 2026-11-07 (+310d) | 2026-01-05 → 2026-11-11 (+310d) |  | 310.8d → 81.1d |
| MOD-SWN-FV-35 | Air Breather & Air Release Valves Installation for Sewerage Network Zone 2 | 2026-01-06 → 2026-11-11 (+309d) | 2026-01-17 → 2026-11-23 (+310d) |  | 310.8d → 81.1d |
| MOD-SWN-FV-45 | Jointing & Piping Accessories Installation for Sewerage Network Zone 2 | 2026-01-18 → 2026-11-23 (+309d) | 2026-01-20 → 2026-11-26 (+310d) |  | 310.8d → 81.1d |
| 3 | **Valve & Flow Meter Chambers** | 2025-10-19 → 2026-07-01 (+255d) | 2026-02-10 → 2026-12-08 (+301d) |  |  |
| 1 | **Valve Chambers Construction** | 2025-10-19 → 2026-07-01 (+255d) | 2026-01-04 → 2026-11-17 (+317d) |  |  |
| MOD-SWN-PW-975 | Excavation Valve Chamber for Sewerage Network Zone 2 | 2025-10-19 → 2026-07-01 A (+255d) | 2025-11-08 → 2026-10-07 (+333d) | 0% → 80% | 369.8d → 100.1d |
| MOD-SWN-PW-985 | Lean Concrete / Bedding Valve Chamber for Sewerage Network Zone 2 | 2025-11-09 → 2026-07-14 A (+247d) | 2025-11-29 → 2026-10-15 (+320d) | 0% → 60% | 369.8d → 100.1d |
| MOD-SWN-VF-124 | Valve Chambers Construction Valve Chamber for Sewerage Network Zone 2 | 2025-11-30 → 2026-07-28 A (+240d) | 2025-12-05 → 2026-10-18 (+317d) | 0% → 50% | 369.8d → 100.1d |
| MOD-SWN-PW-995 | Test Valve Chamber for Sewerage Network Zone 2 | 2025-12-06 → 2026-10-18 (+316d) | 2025-12-20 → 2026-11-02 (+317d) |  | 406.8d → 121.1d |
| MOD-SWN-PW-965 | Backfilling Valve Chamber for Sewerage Network Zone 2 | 2025-12-21 → 2026-11-02 (+316d) | 2026-01-04 → 2026-11-17 (+317d) |  | 406.8d → 121.1d |
| 2 | **Water Drain Chambers Construction** | 2025-10-19 → 2026-07-28 (+282d) | 2026-01-23 → 2026-11-27 (+308d) |  |  |
| MOD-SWN-PW-1015 | Excavation Water Drain Chamber for Sewerage Network Zone 2 | 2025-10-19 → 2026-07-28 A (+282d) | 2025-11-08 → 2026-10-07 (+333d) | 0% → 80% | 375.8d → 103.1d |
| MOD-SWN-PW-1025 | Lean Concrete / Bedding Water Drain Chamber for Sewerage Network Zone 2 | 2025-11-09 → 2026-08-01 A (+265d) | 2025-11-29 → 2026-10-15 (+320d) | 0% → 60% | 375.8d → 103.1d |
| MOD-SWN-VF-134 | Water Drain Chambers Construction Water Drain Chamber for Sewerage Network Zone 2 | 2025-12-06 → 2026-08-18 A (+255d) | 2025-12-24 → 2026-10-28 (+308d) | 0% → 50% | 369.8d → 100.1d |
| MOD-SWN-PW-1035 | Test Water Drain Chamber for Sewerage Network Zone 2 | 2025-12-25 → 2026-10-28 (+307d) | 2026-01-08 → 2026-11-12 (+308d) |  | 387.8d → 111.6d |
| MOD-SWN-PW-1005 | Backfilling Water Drain Chamber for Sewerage Network Zone 2 | 2026-01-09 → 2026-11-12 (+307d) | 2026-01-23 → 2026-11-27 (+308d) |  | 387.8d → 111.6d |
| 3 | **Discharge Chambers Construction** | 2025-10-19 → 2026-07-14 (+268d) | 2026-02-05 → 2026-12-03 (+301d) |  |  |
| MOD-SWN-PW-1055 | Excavation Discharge Chamber for Sewerage Network Zone 2 | 2025-10-19 → 2026-07-14 A (+268d) | 2025-11-08 → 2026-10-11 (+337d) | 0% → 60% | 394.8d → 106.3d |
| MOD-SWN-PW-1065 | Lean Concrete / Bedding Discharge Chamber for Sewerage Network Zone 2 | 2025-11-09 → 2026-08-17 A (+281d) | 2025-11-29 → 2026-10-21 (+326d) | 0% → 50% | 394.8d → 106.3d |
| MOD-SWN-VF-144 | Discharge Chambers Construction Discharge Chamber for Sewerage Network Zone 2 | 2025-12-25 → 2026-08-18 A (+236d) | 2026-01-06 → 2026-11-03 (+301d) | 0% → 50% | 369.8d → 100.1d |
| MOD-SWN-PW-1075 | Test Discharge Chamber for Sewerage Network Zone 2 | 2026-01-07 → 2026-11-03 (+300d) | 2026-01-21 → 2026-11-18 (+301d) |  | 374.8d → 105.1d |
| MOD-SWN-PW-1045 | Backfilling Discharge Chamber for Sewerage Network Zone 2 | 2026-01-22 → 2026-11-18 (+300d) | 2026-02-05 → 2026-12-03 (+301d) |  | 374.8d → 105.1d |
| 4 | **Flow Meter Chambers Construction** | 2025-10-19 → 2026-08-19 (+304d) | 2026-02-10 → 2026-12-08 (+301d) |  |  |
| MOD-SWN-PW-1095 | Excavation Flow Meter Chamber for Sewerage Network Zone 2 | 2025-10-19 → 2026-08-19 A (+304d) | 2025-11-08 → 2026-10-11 (+337d) | 0% → 60% | 407.8d → 110.7d |
| MOD-SWN-PW-1105 | Lean Concrete / Bedding Flow Meter Chamber for Sewerage Network Zone 2 | 2025-11-09 → 2026-08-26 A (+290d) | 2025-11-29 → 2026-10-23 (+328d) | 0% → 40% | 407.8d → 110.7d |
| MOD-SWN-VF-154 | Flow Meter Chambers Construction Flow Meter Chamber for Sewerage Network Zone 2 | 2026-01-07 → 2026-11-03 (+300d) | 2026-01-11 → 2026-11-08 (+301d) |  | 369.8d → 100.1d |
| MOD-SWN-PW-1115 | Test Flow Meter Chamber for Sewerage Network Zone 2 | 2026-01-12 → 2026-11-08 (+300d) | 2026-01-26 → 2026-11-23 (+301d) |  | 369.8d → 100.1d |
| MOD-SWN-PW-1085 | Backfilling Flow Meter Chamber for Sewerage Network Zone 2 | 2026-01-27 → 2026-11-23 (+300d) | 2026-02-10 → 2026-12-08 (+301d) |  | 369.8d → 100.1d |
| 4 | **Manholes** | 2025-10-19 → 2026-02-01 (+105d) | 2026-03-04 → 2026-11-14 (+255d) |  |  |
| MOD-SWN-MH-45 | Depth Variation for Manholes for Sewerage Network Zone 2 | 2025-12-18 → 2026-02-01 A (+45d) | 2025-12-27 → 2026-02-10 A (+45d) | 0% → 100% | 331.8d → none |
| 1 | **1200mm GRP Manholes with Backdrop** | 2025-10-19 → 2026-02-01 (+105d) | 2026-01-19 → 2026-11-08 (+293d) |  |  |
| MOD-SWN-PW-1455 | Excavation 1.2m GRP for Sewerage Network Zone 2 | 2025-10-19 → 2026-02-01 A (+105d) | 2025-11-08 → 2026-10-04 (+330d) | 0% → 92% | 347.8d → 124.49d |
| MOD-SWN-PW-1465 | Lean Concrete / Bedding 1.2m GRP for Sewerage Network Zone 2 | 2025-11-09 → 2026-02-07 A (+90d) | 2025-11-29 → 2026-10-06 (+311d) | 0% → 90% | 347.8d → 124.49d |
| MOD-SWN-MH-145 | 1200mm GRP Manholes with Backdrop 1.2m GRP for Sewerage Network Zone 2 | 2025-11-30 → 2026-02-14 A (+76d) | 2025-12-20 → 2026-10-09 (+293d) | 0% → 88% | 347.8d → 124.49d |
| MOD-SWN-PW-1475 | Test 1.2m GRP for Sewerage Network Zone 2 | 2025-12-21 → 2026-10-09 (+292d) | 2026-01-04 → 2026-10-24 (+293d) |  | 391.8d → 130.4d |
| MOD-SWN-PW-1445 | Backfilling 1.2m GRP for Sewerage Network Zone 2 | 2026-01-05 → 2026-10-24 (+292d) | 2026-01-19 → 2026-11-08 (+293d) |  | 391.8d → 130.4d |
| 2 | **1500mm GRP Manholes (Standard & Backdrop)** | 2025-10-19 → 2026-02-12 (+116d) | 2026-02-09 → 2026-11-11 (+275d) |  |  |
| MOD-SWN-PW-1495 | Excavation 1.5m GRP for Sewerage Network Zone 2 | 2025-10-19 → 2026-02-12 A (+116d) | 2025-11-08 → 2026-10-05 (+331d) | 0% → 90% | 368.8d → 126.17d |
| MOD-SWN-PW-1505 | Lean Concrete / Bedding 1.5m GRP for Sewerage Network Zone 2 | 2025-11-09 → 2026-02-14 A (+97d) | 2025-11-29 → 2026-10-07 (+312d) | 0% → 88% | 368.8d → 126.17d |
| MOD-SWN-MH-155 | 1500mm GRP Manholes (Standard & Backdrop) 1.5m GRP for Sewerage Network Zone 2 | 2025-12-21 → 2026-02-25 A (+66d) | 2026-01-10 → 2026-10-12 (+275d) | 0% → 85% | 347.8d → 124.49d |
| MOD-SWN-PW-1515 | Test 1.5m GRP for Sewerage Network Zone 2 | 2026-01-11 → 2026-10-12 (+274d) | 2026-01-25 → 2026-10-27 (+275d) |  | 370.8d → 127.25d |
| MOD-SWN-PW-1485 | Backfilling 1.5m GRP for Sewerage Network Zone 2 | 2026-01-26 → 2026-10-27 (+274d) | 2026-02-09 → 2026-11-11 (+275d) |  | 370.8d → 127.25d |
| 3 | **1800mm GRP Manholes (Standard & Backdrop)** | 2025-10-19 → 2026-02-14 (+118d) | 2026-02-26 → 2026-11-13 (+260d) |  |  |
| MOD-SWN-PW-1535 | Excavation 1.8m GRP for Sewerage Network Zone 2 | 2025-10-19 → 2026-02-14 A (+118d) | 2025-11-08 → 2026-10-04 (+330d) | 0% → 92% | 389.8d → 130.16d |
| MOD-SWN-PW-1545 | Lean Concrete / Bedding 1.8m GRP for Sewerage Network Zone 2 | 2025-11-09 → 2026-02-16 A (+99d) | 2025-11-29 → 2026-10-06 (+311d) | 0% → 90% | 389.8d → 130.16d |
| MOD-SWN-MH-165 | 1800mm GRP Manholes (Standard & Backdrop) 1.8m GRP for Sewerage Network Zone 2 | 2026-01-11 → 2026-02-28 A (+48d) | 2026-01-27 → 2026-10-14 (+260d) | 0% → 88% | 347.8d → 124.49d |
| MOD-SWN-PW-1555 | Test 1.8m GRP for Sewerage Network Zone 2 | 2026-01-28 → 2026-10-14 (+259d) | 2026-02-11 → 2026-10-29 (+260d) |  | 353.8d → 125.21d |
| MOD-SWN-PW-1525 | Backfilling 1.8m GRP for Sewerage Network Zone 2 | 2026-02-12 → 2026-10-29 (+259d) | 2026-02-26 → 2026-11-13 (+260d) |  | 353.8d → 125.21d |
| 4 | **2000mm GRP Manholes (Standard & Backdrop)** | 2025-10-19 → 2026-02-14 (+118d) | 2026-03-04 → 2026-11-14 (+255d) |  |  |
| MOD-SWN-PW-1575 | Excavation 2m GRP for Sewerage Network Zone 2 | 2025-10-19 → 2026-02-14 A (+118d) | 2025-11-08 → 2026-10-04 (+330d) | 0% → 93% | 406.8d → 132.41d |
| MOD-SWN-PW-1585 | Lean Concrete / Bedding 2m GRP for Sewerage Network Zone 2 | 2025-11-09 → 2026-03-16 A (+127d) | 2025-11-29 → 2026-10-06 (+311d) | 0% → 90% | 406.8d → 132.41d |
| MOD-SWN-MH-175 | 2000mm GRP Manholes (Standard & Backdrop) 2m GRP for Sewerage Network Zone 2 | 2026-01-28 → 2026-03-22 A (+53d) | 2026-02-02 → 2026-10-15 (+255d) | 0% → 88% | 347.8d → 124.49d |
| MOD-SWN-PW-1595 | Test 2m GRP for Sewerage Network Zone 2 | 2026-02-03 → 2026-10-15 (+254d) | 2026-02-17 → 2026-10-30 (+255d) |  | 347.8d → 124.49d |
| MOD-SWN-PW-1565 | Backfilling 2m GRP for Sewerage Network Zone 2 | 2026-02-18 → 2026-10-30 (+254d) | 2026-03-04 → 2026-11-14 (+255d) |  | 347.8d → 124.49d |
| 6 | **Rainwater Drainage Network Zone 2** | 2025-10-19 → 2025-10-15 (-4d) | 2026-01-18 → 2026-11-10 (+296d) |  |  |
| 1 | **Pipe Laying Works** | 2025-10-19 → 2025-11-26 (+38d) | 2026-01-18 → 2026-10-07 (+262d) |  |  |
| 2 | **Supply & Installation of uPVC Pipes (250–300mm dia)** | 2025-10-19 → 2025-11-26 (+38d) | 2025-12-13 → 2026-10-04 (+295d) |  |  |
| MOD-RWN-PL-733 | Excavation to required depth UPVC for Rainwater Drainage Network Zone 2 | 2025-10-19 → 2025-11-26 A (+38d) | 2025-11-08 → 2026-01-26 A (+79d) | 0% → 100% | 13d → none |
| MOD-RWN-PL-743 | Lean Concrete / Bedding UPVC for Rainwater Drainage Network Zone 2 | 2025-11-09 → 2025-11-29 A (+20d) | 2025-11-13 → 2026-06-24 A (+223d) | 0% → 100% | 13d → none |
| MOD-RWN-PL-753 | Laying of uPVC pipe UPVC for Rainwater Drainage Network Zone 2 | 2025-11-14 → 2025-12-01 A (+17d) | 2025-12-02 → 2026-10-03 (+305d) | 0% → 99% | 13d → -72.3d |
| MOD-RWN-PL-763 | Coating / Wrapping UPVC for Rainwater Drainage Network Zone 2 | 2025-12-06 → 2026-01-04 A (+29d) | 2025-12-07 → 2026-10-03 (+300d) | 0% → 90% | 42d → -68.6d |
| MOD-RWN-PL-773 | Test (Pressure-slope) UPVC for Rainwater Drainage Network Zone 2 | 2025-12-03 → 2026-01-04 A (+32d) | 2025-12-05 → 2026-10-03 (+302d) | 0% → 95% | 13d → -72.3d |
| MOD-RWN-PL-783 | Backfilling & Warning Tape UPVC for Rainwater Drainage Network Zone 2 | 2025-12-06 → 2026-01-04 A (+29d) | 2025-12-13 → 2026-10-04 (+295d) | 0% → 82% | 36d → -69.84d |
| 3 | **Supply & Installation of GRP Pipes (350–800mm dia)** | 2025-10-19 → 2025-11-27 (+39d) | 2026-01-18 → 2026-08-16 (+210d) |  |  |
| MOD-RWN-PL-793 | Excavate short trench paths GRP for Rainwater Drainage Network Zone 2 | 2025-10-19 → 2025-11-27 A (+39d) | 2025-11-08 → 2026-02-03 A (+87d) | 0% → 100% | 0d → none |

| ID | Task | Start | Finish | Duration | Complete | Total float |
| --- | --- | --- | --- | --- | --- | --- |
| MOD-RWN-PL-803 | Lean Concrete / bedding material GRP for Rainwater Drainage Network Zone 2 | 2025-11-09 → 2025-11-30 A (+21d) | 2025-11-16 → 2026-08-15 A (+272d) |  | 0% → 100% | 0d → none |
| MOD-RWN-PL-813 | Lay & connect GRP for Rainwater Drainage Network Zone 2 | 2025-11-17 → 2025-12-01 A (+14d) | 2025-12-07 → 2026-08-16 A (+252d) |  | 0% → 100% | 0d → none |
| MOD-RWN-PL-823 | Test (Pressure-slope) GRP for Rainwater Drainage Network Zone 2 | 2025-12-08 → 2026-01-04 A (+27d) | 2025-12-18 → 2026-08-16 A (+241d) |  | 0% → 100% | 0d → none |
| MOD-RWN-PL-833 | Backfilling & compaction GRP for Rainwater Drainage Network Zone 2 | 2026-01-09 → 2026-01-04 A (-5d) | 2026-01-18 → 2026-08-16 A (+210d) |  | 0% → 100% | 0d → none |
| MOD-RWN-PL-893 | Coating / Wrapping GRP for Rainwater Drainage Network Zone 2 | 2025-12-19 → 2026-01-09 A (+21d) | 2026-01-08 → 2026-08-16 A (+220d) |  | 0% → 100% | 0d → none |
| 4 | **uPVC Connection Pipes (150mm dia)** | 2025-10-19 → 2025-11-26 (+38d) | 2026-01-05 → 2026-10-07 (+275d) |  |  |  |
| MOD-RWN-PL-843 | Excavate short trench paths UPVC Con. for Rainwater Drainage Network Zone 2 | 2025-10-19 → 2025-11-26 A (+38d) | 2025-10-23 → 2026-01-13 A (+82d) |  | 0% → 100% | 50d → none |
| MOD-RWN-PL-853 | Lean Concrete / bedding material UPVC Con. for Rainwater Drainage Network Zone 2 | 2025-10-24 → 2025-12-01 A (+38d) | 2025-10-26 → 2026-10-03 (+342d) |  | 0% → 95% | 50d → -72.26d |
| MOD-RWN-PL-863 | Lay & connect UPVC Con. for Rainwater Drainage Network Zone 2 | 2025-12-03 → 2025-12-09 A (+6d) | 2025-12-10 → 2026-10-03 (+297d) |  | 0% → 95% | 13d → -72.3d |
| MOD-RWN-PL-873 | Test (Pressure-slope) UPVC Con. for Rainwater Drainage Network Zone 2 | 2025-12-11 → 2026-01-02 A (+22d) | 2025-12-13 → 2026-10-03 (+294d) |  | 0% → 90% | 13d → -72.3d |
| MOD-RWN-PL-883 | Backfilling & compaction UPVC Con. for Rainwater Drainage Network Zone 2 | 2026-01-04 A | 2026-01-05 → 2026-10-07 (+275d) |  | 0% → 90% | 13d → -72.3d |
| MOD-RWN-PL-903 | Coating / Wrapping UPVC Con. for Rainwater Drainage Network Zone 2 | 2025-12-14 → 2026-01-12 A (+29d) | 2026-01-03 → 2026-10-07 (+277d) |  | 0% → 85% | 13d → -72.3d |
| 5 | **Precast Concrete Box Culverts** | 2025-10-19 → 2026-04-01 (+164d) | 2026-01-18 → 2026-11-09 (+295d) |  |  |  |
| 1 | **Box Culverts (500x500mm to 3500x800mm)** | 2025-10-19 → 2026-04-01 (+164d) | 2026-01-18 → 2026-11-09 (+295d) |  |  |  |
| MOD-RWN-PC-24 | Survey and layout alignment Box culvert for Rainwater Drainage Network Zone 2 | 2025-10-19 → 2026-04-01 A (+164d) | 2025-10-22 → 2026-04-08 A (+168d) |  | 0% → 100% | 0d → none |
| MOD-RWN-PC-474 | Setting Benchmark Box culvert for Rainwater Drainage Network Zone 2 | 2025-10-22 → 2026-04-05 A (+165d) | 2025-10-26 → 2026-04-11 A (+167d) |  | 0% → 100% | 0d → none |
| MOD-RWN-PC-484 | Cleaning Box culvert for Rainwater Drainage Network Zone 2 | 2025-10-26 → 2026-04-09 A (+165d) | 2025-10-30 → 2026-04-13 A (+165d) |  | 0% → 100% | 0d → none |
| MOD-RWN-PC-494 | Testing Box culvert for Rainwater Drainage Network Zone 2 | 2025-10-30 → 2026-04-11 A (+163d) | 2025-11-03 → 2026-04-16 A (+164d) |  | 0% → 100% | 0d → none |
| MOD-RWN-PC-34 | Excavation to required depth Box culvert for Rainwater Drainage Network Zone 2 | 2025-11-03 → 2026-04-25 A (+173d) | 2025-11-27 → 2026-10-04 (+311d) | 21d → 10d | 0% → 85% | 0d → -90.31d |
| MOD-RWN-PC-44 | Dewatering and trench shoring Box culvert for Rainwater Drainage Network Zone 2 | 2025-11-27 → 2026-04-27 A (+151d) | 2025-12-06 → 2026-10-06 (+304d) |  | 0% → 65% | 0d → -90.31d |
| MOD-RWN-PC-54 | Bedding preparation (gravel/lean concrete) Box culvert for Rainwater Drainage Network Zone 2 | 2025-12-06 → 2026-04-30 A (+145d) | 2025-12-13 → 2026-10-10 (+301d) |  | 0% → 55% | 0d → -90.31d |
| MOD-RWN-PC-64 | Installation of box culvert units Box culvert for Rainwater Drainage Network Zone 2 | 2025-12-13 → 2026-10-10 (+301d) | 2025-12-25 → 2026-10-15 (+294d) | 11d → 5d |  | 0d → -90.31d |
| MOD-RWN-PC-74 | Alignment and joint sealing Box culvert for Rainwater Drainage Network Zone 2 | 2025-12-25 → 2026-10-15 (+294d) | 2025-12-30 → 2026-10-20 (+294d) |  |  | 0d → -89.61d |
| MOD-RWN-PC-84 | Construct headwalls/wing walls (if needed) Box culvert for Rainwater Drainage Network Zone 2 | 2025-12-30 → 2026-10-20 (+294d) | 2026-01-07 → 2026-10-28 (+294d) |  |  | 0d → -89.61d |
| MOD-RWN-PC-94 | Backfilling and compaction Box culvert for Rainwater Drainage Network Zone 2 | 2026-01-07 → 2026-10-28 (+294d) | 2026-01-14 → 2026-11-04 (+294d) |  |  | 0d → -89.61d |
| MOD-RWN-PC-104 | Surface finishing Box culvert for Rainwater Drainage Network Zone 2 | 2026-01-15 → 2026-11-05 (+294d) | 2026-01-18 → 2026-11-09 (+295d) |  |  | 0d → -89.61d |
| 2 | **Tube Culverts at Road Intersections** | 2025-11-27 → 2026-04-09 (+133d) | 2026-01-18 → 2026-10-10 (+265d) |  |  |  |
| MOD-RWN-PC-114 | Traffic control setup Tube culvert for Rainwater Drainage Network Zone 2 | 2025-11-27 → 2026-04-09 A (+133d) | 2025-11-30 → 2026-04-13 A (+134d) |  | 0% → 100% | 0d → none |
| MOD-RWN-PC-124 | Trench excavation under road Tube culvert for Rainwater Drainage Network Zone 2 | 2025-11-30 → 2026-04-18 A (+139d) | 2025-12-13 → 2026-10-10 (+301d) |  | 0% → 55% | 0d → -63.51d |
| MOD-RWN-PC-134 | Pipe bedding and twin pipe alignment Tube culvert for Rainwater Drainage Network Zone 2 | 2025-12-13 → 2026-05-02 A (+140d) | 2025-12-20 → 2026-05-07 A (+138d) |  | 0% → 100% | 0d → none |
| MOD-RWN-PC-144 | Pipe laying and jointing Tube culvert for Rainwater Drainage Network Zone 2 | 2025-12-20 → 2026-05-04 A (+135d) | 2026-01-12 → 2026-05-12 A (+120d) | 20d → 10d | 0% → 100% | 0d → none |
| MOD-RWN-PC-154 | Backfilling and road reinstatement Tube culvert for Rainwater Drainage Network Zone 2 | 2026-01-13 → 2026-05-07 A (+114d) | 2026-01-18 → 2026-05-16 A (+118d) |  | 0% → 100% | 0d → none |
| 3 | **Box Culverts at Road Intersections** | 2025-11-30 → 2026-04-22 (+143d) | 2026-01-18 → 2026-11-03 (+289d) |  |  |  |
| MOD-RWN-PC-164 | Traffic diversion and barricading for Rainwater Drainage Network Zone 2 | 2025-11-30 → 2026-04-22 A (+143d) | 2025-12-17 → 2026-05-28 A (+162d) |  | 0% → 100% | 0d → none |
| MOD-RWN-PC-174 | Deep trench excavation with shoring for Rainwater Drainage Network Zone 2 | 2025-12-17 → 2026-04-27 A (+131d) | 2025-12-18 → 2026-04-30 A (+133d) |  | 0% → 100% | 0d → none |
| MOD-RWN-PC-184 | Place bedding material for Rainwater Drainage Network Zone 2 | 2025-12-18 → 2026-05-02 A (+135d) | 2025-12-20 → 2026-10-04 (+288d) |  | 0% → 50% | 0d → -84.96d |
| MOD-RWN-PC-194 | Install precast box culvert for Rainwater Drainage Network Zone 2 | 2025-12-20 → 2026-10-05 (+289d) | 2025-12-24 → 2026-10-08 (+288d) |  |  | 0d → -84.96d |
| MOD-RWN-PC-204 | Construct connection chambers (if needed) for Rainwater Drainage Network Zone 2 | 2025-12-24 → 2026-10-10 (+290d) | 2025-12-25 → 2026-10-10 (+289d) |  |  | 0d → -84.96d |
| MOD-RWN-PC-214 | Joint treatment and testing for Rainwater Drainage Network Zone 2 | 2025-12-25 → 2026-10-11 (+290d) | 2026-01-08 → 2026-10-24 (+289d) |  |  | 0d → -84.96d |
| MOD-RWN-PC-224 | Backfilling and surface reinstatement for Rainwater Drainage Network Zone 2 | 2026-01-10 → 2026-10-25 (+288d) | 2026-01-18 → 2026-11-03 (+289d) |  |  | 0d → -84.96d |
| 4 | **Manholes** | 2025-12-13 → 2026-01-01 (+19d) | 2026-01-18 → 2026-11-10 (+296d) |  |  |  |
| 1 | **Circular GRP Manholes (1200–1800mm dia)** | 2025-12-13 → 2026-01-01 (+19d) | 2026-01-18 → 2026-10-22 (+277d) |  |  |  |
| MOD-RWN-MH-24 | Excavate to full manhole depth Circular Manhole for Rainwater Drainage Network Zone 2 | 2025-12-13 → 2026-01-01 A (+19d) | 2025-12-17 → 2026-07-14 A (+209d) |  | 0% → 100% | 0d → none |
| MOD-RWN-MH-34 | Dewatering and safety barriers Circular Manhole for Rainwater Drainage Network Zone 2 | 2025-12-17 → 2026-01-05 A (+19d) | 2025-12-25 → 2026-10-11 (+290d) |  | 0% → 85% | 0d → -74.66d |
| MOD-RWN-MH-44 | Concrete base construction Circular Manhole for Rainwater Drainage Network Zone 2 | 2025-12-25 → 2026-01-06 A (+12d) | 2025-12-31 → 2026-10-12 (+285d) |  | 0% → 85% | 0d → -74.66d |
| MOD-RWN-MH-54 | Install GRP manhole shaft sections Circular Manhole for Rainwater Drainage Network Zone 2 | 2025-12-31 → 2026-01-07 A (+7d) | 2026-01-10 → 2026-10-14 (+277d) |  | 0% → 75% | 0d → -74.66d |
| MOD-RWN-MH-64 | Place slab and cover frame Circular Manhole for Rainwater Drainage Network Zone 2 | 2026-01-10 → 2026-07-06 A (+177d) | 2026-01-13 → 2026-10-17 (+277d) |  | 0% → 25% | 0d → -74.66d |
| MOD-RWN-MH-74 | Waterproofing Circular Manhole for Rainwater Drainage Network Zone 2 | 2026-01-13 → 2026-10-17 (+277d) | 2026-01-15 → 2026-10-19 (+277d) |  |  | 0d → -74.66d |
| MOD-RWN-MH-84 | Backfilling and compaction Circular Manhole for Rainwater Drainage Network Zone 2 | 2026-01-17 → 2026-10-20 (+276d) | 2026-01-18 → 2026-10-22 (+277d) |  |  | 0d → -74.66d |
| 3 | **Concrete Manholes for 1500x1500 Box Pipes** | 2025-12-13 → 2026-02-10 (+59d) | 2026-01-11 → 2026-10-25 (+287d) |  |  |  |
| MOD-RWN-MH-164 | Excavation Concrete Manhole 1.5x1.5 for Rainwater Drainage Network Zone 2 | 2025-12-13 → 2026-02-10 A (+59d) | 2025-12-18 → 2026-07-15 A (+209d) |  | 0% → 100% | 6.9d → none |
| MOD-RWN-MH-174 | Base slab and wall shuttering Concrete Manhole 1.5x1.5 for Rainwater Drainage Network Zone 2 | 2025-12-18 → 2026-02-16 A (+60d) | 2025-12-23 → 2026-10-11 (+292d) |  | 0% → 75% | 6.9d → -76.66d |
| MOD-RWN-MH-184 | Wall reinforcement and casting Concrete Manhole 1.5x1.5 for Rainwater Drainage Network Zone 2 | 2025-12-23 → 2026-03-01 A (+68d) | 2025-12-30 → 2026-10-14 (+288d) |  | 0% → 60% | 6.9d → -76.66d |
| MOD-RWN-MH-194 | Roof slab with openings Concrete Manhole 1.5x1.5 for Rainwater Drainage Network Zone 2 | 2025-12-30 → 2026-07-05 A (+187d) | 2026-01-03 → 2026-10-17 (+287d) |  | 0% → 15% | 6.9d → -76.66d |
| MOD-RWN-MH-204 | Masonry/benching works inside Concrete Manhole 1.5x1.5 for Rainwater Drainage Network Zone 2 | 2026-01-03 → 2026-10-17 (+287d) | 2026-01-05 → 2026-10-19 (+287d) |  |  | 6.9d → -76.66d |
| MOD-RWN-MH-214 | Install cover and frame Concrete Manhole 1.5x1.5 for Rainwater Drainage Network Zone 2 | 2026-01-05 → 2026-10-19 (+287d) | 2026-01-07 → 2026-10-21 (+287d) |  |  | 6.9d → -76.66d |
| MOD-RWN-MH-224 | Backfill in layers Concrete Manhole 1.5x1.5 for Rainwater Drainage Network Zone 2 | 2026-01-07 → 2026-10-21 (+287d) | 2026-01-11 → 2026-10-25 (+287d) |  |  | 6.9d → -76.66d |
| 2 | **Concrete Manholes for 1000x1000 Box Pipes** | 2025-12-13 → 2026-03-02 (+79d) | 2026-01-15 → 2026-11-10 (+299d) |  |  |  |
| MOD-RWN-MH-94 | Excavation Concrete Manhole 1x1 for Rainwater Drainage Network Zone 2 | 2025-12-13 → 2026-03-02 A (+79d) | 2025-12-17 → 2026-10-12 (+299d) |  | 0% → 60% | 2.9d → -90.31d |
| MOD-RWN-MH-104 | Base slab and wall shuttering Concrete Manhole 1x1 for Rainwater Drainage Network Zone 2 | 2025-12-17 → 2026-10-12 (+299d) | 2025-12-20 → 2026-10-14 (+298d) |  |  | 2.9d → -90.31d |
| MOD-RWN-MH-114 | Wall reinforcement and casting Concrete Manhole 1x1 for Rainwater Drainage Network Zone 2 | 2025-12-20 → 2026-10-14 (+298d) | 2025-12-25 → 2026-10-20 (+299d) |  |  | 2.9d → -90.31d |
| MOD-RWN-MH-124 | Roof slab with openings Concrete Manhole 1x1 for Rainwater Drainage Network Zone 2 | 2025-12-25 → 2026-10-20 (+299d) | 2026-01-01 → 2026-10-27 (+299d) |  |  | 2.9d → -90.31d |
| MOD-RWN-MH-134 | Masonry/benching works inside Concrete Manhole 1x1 for Rainwater Drainage Network Zone 2 | 2026-01-01 → 2026-10-27 (+299d) | 2026-01-07 → 2026-11-02 (+299d) |  |  | 2.9d → -90.31d |
| MOD-RWN-MH-144 | Install cover and frame Concrete Manhole 1x1 for Rainwater Drainage Network Zone 2 | 2026-01-07 → 2026-11-02 (+299d) | 2026-01-12 → 2026-11-07 (+299d) |  |  | 2.9d → -90.31d |
| MOD-RWN-MH-154 | Backfill in layers Concrete Manhole 1x1 for Rainwater Drainage Network Zone 2 | 2026-01-12 → 2026-11-07 (+299d) | 2026-01-15 → 2026-11-10 (+299d) |  |  | 2.9d → -90.31d |
| 2 | **Chambers and Catch Basins** | 2025-12-13 → 2025-10-15 (-59d) | 2026-01-18 → 2026-06-25 (+158d) |  |  |  |
| 1 | **Gully Outfalls** | 2025-12-13 → 2025-10-15 (-59d) | 2026-01-18 → 2026-06-25 (+158d) |  |  |  |
| MOD-RWN-CC-18 | Identify discharge zones Gully Outfall for Rainwater Drainage Network Zone 2 | 2025-12-13 → 2025-10-15 A (-59d) | 2025-12-17 → 2026-02-10 A (+55d) |  | 0% → 100% | 0.9d → none |
| MOD-RWN-CC-28 | Excavate outfall channel Gully Outfall for Rainwater Drainage Network Zone 2 | 2025-12-17 → 2025-12-22 A (+5d) | 2025-12-24 → 2026-02-16 A (+54d) |  | 0% → 100% | 0.9d → none |
| MOD-RWN-CC-38 | Place concrete apron or pipes Gully Outfall for Rainwater Drainage Network Zone 2 | 2025-12-24 → 2026-01-01 A (+8d) | 2026-01-06 → 2026-06-24 A (+169d) |  | 0% → 100% | 0.9d → none |

| ID | Task | Start | Finish | Complete | Total float |
| --- | --- | --- | --- | --- | --- |
| MOD-RWN-CC-48 | Provide slope protection (riprap) Gully Outfall for Rainwater Drainage Network Zone 2 | 2026-01-06 → 2026-02-01 A (+26d) | 2026-01-13 → 2026-06-25 A (+163d) | 0% → 100% | 0.9d → none |
| MOD-RWN-CC-58 | Compact and shape terrain Gully Outfall for Rainwater Drainage Network Zone 2 | 2026-01-13 → 2026-06-17 A (+155d) | 2026-01-18 → 2026-06-22 A (+155d) | 0% → 100% | 0.9d → none |
| 2 | **Rainwater Catch Basins** | 2025-12-13 → 2025-12-29 (+16d) | 2026-01-11 → 2026-06-25 (+165d) |  |  |
| MOD-RWN-CC-68 | Excavate pit area Catch Basin for Rainwater Drainage Network Zone 2 | 2025-12-13 → 2025-12-29 A (+16d) | 2025-12-20 → 2026-01-03 A (+14d) | 0% → 100% | 0d → none |
| MOD-RWN-CC-78 | Lay bedding and place chamber Catch Basin for Rainwater Drainage Network Zone 2 | 2025-12-20 → 2026-01-18 A (+29d) | 2025-12-24 → 2026-06-22 A (+180d) | 0% → 100% | 0d → none |
| MOD-RWN-CC-88 | Connect lateral inlet pipe Catch Basin for Rainwater Drainage Network Zone 2 | 2025-12-24 → 2026-02-01 A (+39d) | 2026-01-03 → 2026-06-23 A (+171d) | 0% → 100% | 0d → none |
| MOD-RWN-CC-98 | Cover with grating Catch Basin for Rainwater Drainage Network Zone 2 | 2026-01-03 → 2026-02-15 A (+43d) | 2026-01-08 → 2026-06-24 A (+167d) | 0% → 100% | 6.9d → none |
| MOD-RWN-CC-108 | Backfill and surface finish Catch Basin for Rainwater Drainage Network Zone 2 | 2026-01-08 → 2026-06-23 A (+166d) | 2026-01-11 → 2026-06-25 A (+165d) | 0% → 100% | 6.9d → none |
| 3 | **Precast Chambers for Absorption Pits** | 2025-12-13 → 2025-12-30 (+17d) | 2026-01-18 → 2026-04-06 (+78d) |  |  |
| MOD-RWN-CC-118 | Excavate pit area Absorption Pit for Rainwater Drainage Network Zone 2 | 2025-12-13 → 2025-12-30 A (+17d) | 2025-12-18 → 2026-02-09 A (+53d) | 0% → 100% | 0d → none |
| MOD-RWN-CC-128 | Install base slab and precast chamber Absorption Pit for Rainwater Drainage Network Zone 2 | 2025-12-18 → 2026-01-01 A (+14d) | 2025-12-25 → 2026-02-16 A (+53d) | 0% → 100% | 0d → none |
| MOD-RWN-CC-138 | Connect outlet/inlet piping Absorption Pit for Rainwater Drainage Network Zone 2 | 2025-12-27 → 2026-01-28 A (+32d) | 2026-01-05 → 2026-03-01 A (+55d) | 0% → 100% | 0d → none |
| MOD-RWN-CC-148 | Waterproofing and protection Absorption Pit for Rainwater Drainage Network Zone 2 | 2026-01-06 → 2026-03-03 A (+56d) | 2026-01-12 → 2026-03-16 A (+63d) | 0% → 100% | 0d → none |
| MOD-RWN-CC-158 | Backfill and compact Absorption Pit for Rainwater Drainage Network Zone 2 | 2026-01-13 → 2026-03-24 A (+70d) | 2026-01-18 → 2026-04-06 A (+78d) | 0% → 100% | 0d → none |
| 3 | **Gully Outfalls to Swales** | 2025-12-24 → 2026-02-01 (+39d) | 2026-01-18 → 2026-10-25 (+280d) |  |  |
| 1 | **Gully Outfalls to Swales** | 2025-12-24 → 2026-02-01 (+39d) | 2026-01-18 → 2026-10-14 (+269d) |  |  |
| MOD-RWN-GO-11 | Identify swale discharge zones Gully Outfall to Swales for Rainwater Drainage Network Zone 2 | 2025-12-24 → 2026-02-01 A (+39d) | 2025-12-28 → 2026-02-28 A (+62d) | 0% → 100% | 0d → none |
| MOD-RWN-GO-21 | Excavate outfall channel Gully Outfall to Swales for Rainwater Drainage Network Zone 2 | 2025-12-28 → 2026-02-07 A (+41d) | 2026-01-03 → 2026-10-10 (+280d) | 0% → 95% | 0d → -67.61d |
| MOD-RWN-GO-31 | Place concrete apron or pipes Gully Outfall to Swales for Rainwater Drainage Network Zone 2 | 2026-01-03 → 2026-02-15 A (+43d) | 2026-01-11 → 2026-10-11 (+273d) | 0% → 95% | 0d → -67.61d |
| MOD-RWN-GO-41 | Provide slope protection (riprap) Gully Outfall to Swales for Rainwater Drainage Network Zone 2 | 2026-01-11 → 2026-02-20 A (+40d) | 2026-01-15 → 2026-10-11 (+269d) | 0% → 90% | 0d → -67.61d |
| MOD-RWN-GO-51 | Compact and shape terrain Gully Outfall to Swales for Rainwater Drainage Network Zone 2 | 2026-01-17 → 2026-10-12 (+268d) | 2026-01-18 → 2026-10-14 (+269d) |  | 0d → -67.61d |
| 2 | **Riprap Works & Protection** | 2025-12-24 → 2026-02-01 (+39d) | 2026-01-14 → 2026-10-25 (+284d) |  |  |
| MOD-RWN-GO-61 | Lay filter fabric/membrane for Rainwater Drainage Network Zone 2 | 2025-12-24 → 2026-02-01 A (+39d) | 2025-12-28 → 2026-10-11 (+287d) | 0% → 60% | 3.9d → -76.41d |
| MOD-RWN-GO-71 | Place riprap/stone layer for Rainwater Drainage Network Zone 2 | 2025-12-28 → 2026-02-17 A (+51d) | 2026-01-05 → 2026-10-15 (+283d) | 0% → 50% | 3.9d → -76.41d |
| MOD-RWN-GO-81 | Compact edges for Rainwater Drainage Network Zone 2 | 2026-01-05 → 2026-10-15 (+283d) | 2026-01-11 → 2026-10-21 (+283d) |  | 3.9d → -76.41d |
| MOD-RWN-GO-91 | Ensure hydraulic flow direction for Rainwater Drainage Network Zone 2 | 2026-01-11 → 2026-10-21 (+283d) | 2026-01-14 → 2026-10-25 (+284d) |  | 3.9d → -76.41d |
| 6 | **Backfilling & Bedding** | 2025-11-03 → 2025-12-01 (+28d) | 2026-01-06 → 2026-10-12 (+279d) |  |  |
| 1 | **Backfilling Materials (Type A – 201–700mm Pipes)** | 2025-11-03 → 2026-01-05 (+63d) | 2026-01-06 → 2026-08-22 (+228d) |  |  |
| MOD-RWN-BB-12 | Place granular bedding under pipe for Rainwater Drainage Network Zone 2 | 2025-11-03 → 2026-01-05 A (+63d) | 2025-11-10 → 2026-08-22 A (+285d) | 0% → 100% | 10.9d → none |
| MOD-RWN-BB-22 | Lay and align pipe for Rainwater Drainage Network Zone 2 | 2025-11-10 → 2026-01-12 A (+63d) | 2025-12-04 → 2026-08-22 A (+261d) | 0% → 100% | 10.9d → none |
| MOD-RWN-BB-32 | Backfill up to spring line for Rainwater Drainage Network Zone 2 | 2025-12-04 → 2026-01-21 A (+48d) | 2025-12-20 → 2026-08-22 A (+245d) | 0% → 100% | 10.9d → none |
| MOD-RWN-BB-42 | Compact layer-wise for Rainwater Drainage Network Zone 2 | 2025-12-20 → 2026-02-01 A (+43d) | 2025-12-30 → 2026-08-22 A (+235d) | 0% → 100% | 10.9d → none |
| MOD-RWN-BB-52 | Final fill to subgrade level for Rainwater Drainage Network Zone 2 | 2025-12-30 → 2026-08-01 A (+214d) | 2026-01-06 → 2026-08-22 A (+228d) | 0% → 100% | 10.9d → none |
| 2 | **Gravel Bedding & Filter Cloth for uPVC Drain Pipes** | 2025-11-27 → 2025-12-01 (+4d) | 2026-01-06 → 2026-10-12 (+279d) |  |  |
| MOD-RWN-BB-102 | Final fill and trench restoration for Rainwater Drainage Network Zone 2 | 2025-12-28 → 2025-12-01 A (-27d) | 2026-01-06 → 2026-10-12 (+279d) | 0% → 70% | 10.9d → -65.75d |
| MOD-RWN-BB-62 | Line trench with filter cloth for Rainwater Drainage Network Zone 2 | 2025-11-27 → 2025-12-23 A (+26d) | 2025-12-04 → 2026-10-05 (+305d) | 0% → 90% | 10.9d → -65.75d |
| MOD-RWN-BB-72 | Place and compact gravel bedding for Rainwater Drainage Network Zone 2 | 2025-12-04 → 2026-01-03 A (+30d) | 2025-12-09 → 2026-10-05 (+300d) | 0% → 88% | 10.9d → -65.75d |
| MOD-RWN-BB-82 | Lay pipe within gravel zone for Rainwater Drainage Network Zone 2 | 2025-12-09 → 2026-01-03 A (+25d) | 2025-12-20 → 2026-10-07 (+291d) | 0% → 79% | 10.9d → -65.75d |
| MOD-RWN-BB-92 | Wrap filter cloth above pipe for Rainwater Drainage Network Zone 2 | 2025-12-20 → 2026-01-03 A (+14d) | 2025-12-28 → 2026-10-10 (+286d) | 0% → 74% | 10.9d → -65.75d |
| 1 | **Potable Water Network Zone 2** | 2025-10-19 → 2025-12-23 (+65d) | 2026-01-13 → 2026-11-25 (+316d) |  |  |
| 1 | **Pipe Installation Works** | 2025-10-19 → 2025-12-23 (+65d) | 2025-12-14 → 2026-10-04 (+294d) |  |  |
| MOD-PWN-PI-143 | Trench Excavation for Potable Water Network Zone 2 | 2025-10-19 → 2025-12-23 A (+65d) | 2025-11-08 → 2026-01-12 A (+65d) | 0% → 100% | 10d → none |
| MOD-PWN-PI-153 | Lean Concrete / Pipe Bedding Preparation for Potable Water Network Zone 2 | 2025-11-09 → 2026-01-01 A (+53d) | 2025-11-12 → 2026-10-03 (+325d) | 0% → 97% | 35d → 88d |
| MOD-PWN-PI-163 | HDPE Pipe Laying (200 mm to 710 mm) for Potable Water Network Zone 2 | 2025-11-13 → 2026-01-04 A (+52d) | 2025-12-03 → 2026-10-03 (+304d) | 0% → 97% | 35d → 88d |
| MOD-PWN-PI-173 | Test (Pressure-slope) for Potable Water Network Zone 2 | 2025-12-04 → 2026-01-05 A (+32d) | 2025-12-06 → 2026-10-03 (+301d) | 0% → 95% | 35d → 88d |
| MOD-PWN-PI-203 | Coating / Wrapping for Potable Water Network Zone 2 | 2025-12-07 → 2026-02-15 A (+70d) | 2025-12-11 → 2026-10-04 (+297d) | 0% → 95% | 35d → 88d |
| MOD-PWN-PI-213 | Backfilling & Warrning Tape for Potable Water Network Zone 2 | 2025-12-12 → 2026-02-23 A (+73d) | 2025-12-14 → 2026-10-04 (+294d) | 0% → 95% | 35d → 88d |
| 2 | **Valve Installation & Chambers** | 2025-11-09 → 2026-04-01 (+143d) | 2025-12-31 → 2026-10-17 (+290d) |  |  |
| MOD-PWN-VC-37 | Valve Chamber Excavation for Potable Water Network Zone 2 | 2025-11-09 → 2026-04-01 A (+143d) | 2025-11-22 → 2026-10-03 (+315d) | 0% → 92% | 9d → 48.16d |
| MOD-PWN-VC-47 | RC Slab, Walls, or Precast Chambers for Potable Water Network Zone 2 | 2025-11-23 → 2026-04-07 A (+135d) | 2025-12-09 → 2026-10-05 (+300d) | 0% → 91% | 24d → 65.09d |
| MOD-PWN-VC-7 | Gate Valves (225–710 mm) for Potable Water Network Zone 2 | 2025-12-07 → 2026-04-14 A (+128d) | 2025-12-20 → 2026-10-04 (+288d) | 0% → 91% | 15d → 65.48d |
| MOD-PWN-VC-17 | Butterfly Valves (355, 500, 630 mm) for Potable Water Network Zone 2 | 2025-12-07 → 2026-04-18 A (+132d) | 2025-12-20 → 2026-10-04 (+288d) | 0% → 91% | 15d → 65.48d |
| MOD-PWN-VC-27 | 3-exit (2 x 2.5-inch and 1 x 4-inch) dry vacuum cylinder detachable fire nozzle for Potable Water Network Zone 2 | 2025-12-07 → 2026-04-22 A (+136d) | 2025-12-20 → 2026-10-04 (+288d) | 0% → 84% | 15d → 65.48d |
| MOD-PWN-VC-57 | Fixing Covers, Gratings, Frames for Potable Water Network Zone 2 | 2025-12-21 → 2026-10-05 (+288d) | 2025-12-27 → 2026-10-12 (+289d) |  | 15d → 65.09d |
| MOD-PWN-VC-67 | Tagging & Painting for Potable Water Network Zone 2 | 2025-12-28 → 2026-10-12 (+288d) | 2025-12-31 → 2026-10-17 (+290d) |  | 15d → 65.09d |
| 3 | **Flow Meter Installation** | 2025-11-23 → 2026-08-30 (+280d) | 2026-01-13 → 2026-11-25 (+316d) |  |  |
| MOD-PWN-FM-5 | Chamber Excavation (280 mm, 300 mm, 500 mm, 800 mm) for Potable Water Network Zone 2 | 2025-11-23 → 2026-08-30 A (+280d) | 2025-12-01 → 2026-10-05 (+308d) | 0% → 83% | 11d → 48.16d |
| MOD-PWN-FM-15 | RC or Precast Chamber Construction for Potable Water Network Zone 2 | 2025-12-02 → 2026-09-01 A (+273d) | 2025-12-09 → 2026-10-10 (+305d) | 0% → 44% | 11d → 48.16d |
| MOD-PWN-FM-25 | Flowmeter Installation & Pipe Integration for Potable Water Network Zone 2 | 2025-12-18 → 2026-10-29 (+315d) | 2025-12-31 → 2026-11-12 (+316d) |  | 4d → 31.15d |
| MOD-PWN-FM-35 | Wiring/Cabling if applicable for Potable Water Network Zone 2 | 2026-01-01 → 2026-11-12 (+315d) | 2026-01-10 → 2026-11-22 (+316d) |  | 4d → 31.15d |
| MOD-PWN-FM-45 | Calibration & Commissioning for Potable Water Network Zone 2 | 2026-01-11 → 2026-11-22 (+315d) | 2026-01-13 → 2026-11-25 (+316d) |  | 4d → 31.15d |
| 4 | **Washout & Air Valve Chambers** | 2025-11-09 → 2026-05-01 (+173d) | 2026-01-07 → 2026-10-12 (+278d) |  |  |
| MOD-PWN-WA-7 | Chamber Excavation (280 mm to 710 mm) for Potable Water Network Zone 2 | 2025-11-09 → 2026-05-01 A (+173d) | 2025-11-22 → 2026-08-30 A (+281d) | 0% → 100% | 9d → none |
| MOD-PWN-WA-17 | RC Blinding + Base + Walls for Potable Water Network Zone 2 | 2025-11-23 → 2026-05-05 A (+163d) | 2025-11-27 → 2026-08-30 A (+276d) | 0% → 100% | 9d → none |
| MOD-PWN-WA-27 | Pipe Work for Potable Water Network Zone 2 | 2025-11-29 → 2026-05-13 A (+165d) | 2025-12-14 → 2026-10-05 (+295d) | 0% → 85% | 9d → 68.6d |
| MOD-PWN-WA-37 | Washout (Valve + Outlet) Installation for Potable Water Network Zone 2 | 2025-12-15 → 2026-05-17 A (+153d) | 2025-12-25 → 2026-10-07 (+286d) | 0% → 80% | 9d → 68.6d |
| MOD-PWN-WA-47 | Air Valve Rooms (Valve + Outlet) Installation for Potable Water Network Zone 2 | 2025-12-27 → 2026-08-11 A (+227d) | 2025-12-31 → 2026-10-08 (+281d) | 0% → 70% | 9d → 68.6d |
| MOD-PWN-WA-57 | Covers, Ladders & Tags for Potable Water Network Zone 2 | 2026-01-01 → 2026-09-17 A (+259d) | 2026-01-05 → 2026-10-10 (+278d) | 0% → 70% | 9d → 68.6d |
| MOD-PWN-WA-67 | Backfilling & Final Finishing for Potable Water Network Zone 2 | 2026-01-06 → 2026-10-10 (+277d) | 2026-01-07 → 2026-10-12 (+278d) |  | 9d → 68.6d |
| 2 | **Irrigation Network Zone 2** | 2025-10-19 → 2025-11-20 (+32d) | 2026-01-18 → 2026-11-08 (+294d) |  |  |

| ID | Task | Start | Finish | Complete | Total float |
| --- | --- | --- | --- | --- | --- |
| 1 | **Excavation, Pipe Laying & Backfilling** | 2025-10-19 → 2025-11-20 (+32d) | 2025-12-14 → 2026-10-05 (+295d) |  |  |
| MOD-IRN-EB-330 | Trench Excavation for Irrigation Network Zone 2 | 2025-10-19 → 2025-11-20 A (+32d) | 2025-11-08 → 2026-08-29 A (+294d) | 0% → 100% | 35d → none |
| MOD-IRN-EB-340 | Lean Concrete / Pipe Bedding with Type B Material for Irrigation Network Zone 2 | 2025-11-09 → 2025-12-01 A (+22d) | 2025-11-17 → 2026-10-03 (+320d) | 0% → 97% | 35d → 87.2d |
| MOD-IRN-EB-350 | HDPE Pipe Laying (125 mm to 630 mm) for Irrigation Network Zone 2 | 2025-11-18 → 2026-01-01 A (+44d) | 2025-12-08 → 2026-10-03 (+299d) | 0% → 97% | 35d → 87.2d |
| MOD-IRN-EB-360 | Test (Pressure-slope) for Irrigation Network Zone 2 | 2025-12-09 → 2026-01-06 A (+28d) | 2025-12-10 → 2026-10-04 (+298d) | 0% → 90% | 35d → 87.2d |
| MOD-IRN-EB-370 | Coating / Wrapping for Irrigation Network Zone 2 | 2025-12-11 → 2026-02-20 A (+71d) | 2025-12-12 → 2026-10-04 (+296d) | 0% → 90% | 35d → 87.2d |
| MOD-IRN-EB-380 | Backfilling & Warrning Tape for Irrigation Network Zone 2 | 2025-12-13 → 2026-02-28 A (+77d) | 2025-12-14 → 2026-10-05 (+295d) | 0% → 60% | 35d → 87.2d |
| 2 | **Valves and Appurtenances** | 2025-12-07 → 2026-02-05 (+60d) | 2025-12-29 → 2026-10-07 (+282d) |  |  |
| MOD-IRN-VA-5 | Supply & Installation of Valves (Gate Valve) for Irrigation Network Zone 2 | 2025-12-07 → 2026-02-05 A (+60d) | 2025-12-15 → 2026-10-04 (+293d) | 0% → 85% | 0d → 66.89d |
| MOD-IRN-VA-15 | Supply & Installation of Valves (Butterfly Valve) for Irrigation Network Zone 2 | 2025-12-11 → 2026-02-27 A (+78d) | 2025-12-20 → 2026-10-04 (+288d) | 0% → 83% | 0d → 66.89d |
| MOD-IRN-VA-25 | Installation of Flanges, Bolts, Collars, Nuts for Irrigation Network Zone 2 | 2025-12-21 → 2026-02-28 A (+69d) | 2025-12-24 → 2026-10-05 (+285d) | 0% → 80% | 0d → 66.89d |
| MOD-IRN-VA-35 | Valve Pressure Testing for Irrigation Network Zone 2 | 2025-12-25 → 2026-07-04 A (+191d) | 2025-12-27 → 2026-10-06 (+283d) | 0% → 50% | 17d → 73.04d |
| MOD-IRN-VA-45 | Support Brackets/Anchor Blocks for Irrigation Network Zone 2 | 2025-12-28 → 2026-07-07 A (+191d) | 2025-12-29 → 2026-10-07 (+282d) | 0% → 40% | 17d → 73.04d |
| 3 | **Valve Rooms** | 2025-12-21 → 2026-01-30 (+40d) | 2026-01-18 → 2026-10-04 (+259d) |  |  |
| MOD-IRN-VR-7 | Excavation for Valve Room Valve Chamber for Irrigation Network Zone 2 | 2025-12-21 → 2026-01-30 A (+40d) | 2025-12-24 → 2026-06-01 A (+159d) | 0% → 100% | 0d → none |
| MOD-IRN-VR-17 | Blinding Concrete Valve Chamber for Irrigation Network Zone 2 | 2025-12-25 → 2026-02-01 A (+38d) | 2025-12-27 → 2026-06-30 A (+185d) | 0% → 100% | 0d → none |
| MOD-IRN-VR-27 | RCC Base Slab & Chamber Walls Valve Chamber for Irrigation Network Zone 2 | 2025-12-28 → 2026-02-02 A (+36d) | 2025-12-31 → 2026-07-01 A (+182d) | 0% → 100% | 0d → none |
| MOD-IRN-VR-37 | Block Wall Construction (if any) Valve Chamber for Irrigation Network Zone 2 | 2026-01-01 → 2026-03-04 A (+62d) | 2026-01-06 → 2026-07-02 A (+177d) | 0% → 100% | 0d → none |
| MOD-IRN-VR-47 | Installation of Valve inside the Room Valve Chamber for Irrigation Network Zone 2 | 2026-01-07 → 2026-07-01 A (+175d) | 2026-01-12 → 2026-07-08 A (+177d) | 0% → 100% | 0d → none |
| MOD-IRN-VR-57 | Fixing Frame & Cover Valve Chamber for Irrigation Network Zone 2 | 2026-01-13 → 2026-07-02 A (+170d) | 2026-01-14 → 2026-07-09 A (+176d) | 0% → 100% | 0d → none |
| MOD-IRN-VR-67 | Backfilling and Finishing Valve Chamber for Irrigation Network Zone 2 | 2026-01-15 → 2026-07-13 A (+179d) | 2026-01-18 → 2026-10-04 (+259d) | 0% → 80% | 0d → 75.44d |
| 4 | **Washout Chambers** | 2025-12-21 → 2026-04-18 (+118d) | 2026-01-18 → 2026-10-05 (+260d) |  |  |
| MOD-IRN-WC-6 | Excavation for Chamber Washout Chamber for Irrigation Network Zone 2 | 2025-12-21 → 2026-04-18 A (+118d) | 2025-12-25 → 2026-05-31 A (+157d) | 0% → 100% | 0d → none |
| MOD-IRN-WC-16 | Blinding Concrete Washout Chamber for Irrigation Network Zone 2 | 2025-12-27 → 2026-04-19 A (+113d) | 2025-12-29 → 2026-06-17 A (+170d) | 0% → 100% | 0d → none |
| MOD-IRN-WC-26 | Construction of RCC Base & Chamber Wall Washout Chamber for Irrigation Network Zone 2 | 2025-12-30 → 2026-04-21 A (+112d) | 2026-01-06 → 2026-06-23 A (+168d) | 0% → 100% | 0d → none |
| MOD-IRN-WC-36 | Washout Valve & Pipe Connection Washout Chamber for Irrigation Network Zone 2 | 2026-01-07 → 2026-04-22 A (+105d) | 2026-01-12 → 2026-06-24 A (+163d) | 0% → 100% | 0d → none |
| MOD-IRN-WC-46 | Manhole Frame, Cover & Ladder Fixing Washout Chamber for Irrigation Network Zone 2 | 2026-01-13 → 2026-06-22 A (+160d) | 2026-01-15 → 2026-10-05 (+263d) | 0% → 75% | 0d → 75.19d |
| MOD-IRN-WC-56 | Backfilling & Reinstatement Washout Chamber for Irrigation Network Zone 2 | 2026-01-17 → 2026-07-05 A (+169d) | 2026-01-18 → 2026-10-05 (+260d) | 0% → 95% | 0d → 75.19d |
| 5 | **Air Valve Chambers** | 2025-12-25 → 2026-03-23 (+88d) | 2026-01-18 → 2026-07-28 (+191d) |  |  |
| MOD-IRN-AC-15 | Blinding & RCC Base Air Valve Chamber for Irrigation Network Zone 2 | 2025-12-30 → 2026-03-23 A (+83d) | 2026-01-03 → 2026-06-22 A (+170d) | 0% → 100% | 0d → none |
| MOD-IRN-AC-5 | Chamber Excavation Air Valve Chamber for Irrigation Network Zone 2 | 2025-12-25 → 2026-03-23 A (+88d) | 2025-12-29 → 2026-05-23 A (+145d) | 0% → 100% | 0d → none |
| MOD-IRN-AC-25 | Wall Casting / Blockwork Air Valve Chamber for Irrigation Network Zone 2 | 2026-01-04 → 2026-03-25 A (+80d) | 2026-01-10 → 2026-06-23 A (+164d) | 0% → 100% | 0d → none |
| MOD-IRN-AC-35 | Air Valve Installation (280–630 mm) Air Valve Chamber for Irrigation Network Zone 2 | 2026-01-11 → 2026-04-13 A (+92d) | 2026-01-15 → 2026-07-01 A (+167d) | 0% → 100% | 0d → none |
| MOD-IRN-AC-45 | Cover Fixing & Finishing Air Valve Chamber for Irrigation Network Zone 2 | 2026-01-17 → 2026-06-23 A (+157d) | 2026-01-18 → 2026-07-28 A (+191d) | 0% → 100% | 0d → none |
| 6 | **Flow Meter Chambers** | 2025-12-21 → 2026-04-01 (+101d) | 2026-01-18 → 2026-11-08 (+294d) |  |  |
| MOD-IRN-FC-6 | Chamber Excavation Flow Meter Chamber for Irrigation Network Zone 2 | 2025-12-21 → 2026-04-01 A (+101d) | 2025-12-27 → 2026-06-29 A (+184d) | 0% → 100% | 0d → none |
| MOD-IRN-FC-16 | RCC Base & Wall Construction Flow Meter Chamber for Irrigation Network Zone 2 | 2025-12-28 → 2026-05-26 A (+149d) | 2026-01-01 → 2026-10-05 (+277d) | 0% → 85% | 0d → 66.89d |
| MOD-IRN-FC-26 | Flow Meter Installation (280, 300, 500 mm) Flow Meter Chamber for Irrigation Network Zone 2 | 2026-01-03 → 2026-07-01 A (+179d) | 2026-01-07 → 2026-10-31 (+297d) | 0% → 82% | 0d → 45.75d |
| MOD-IRN-FC-36 | Integration with Pipework Flow Meter Chamber for Irrigation Network Zone 2 | 2026-01-08 → 2026-07-02 A (+175d) | 2026-01-10 → 2026-10-31 (+294d) | 0% → 75% | 0d → 45.75d |
| MOD-IRN-FC-46 | Testing & Calibration Flow Meter Chamber for Irrigation Network Zone 2 | 2026-01-11 → 2026-10-31 (+293d) | 2026-01-14 → 2026-11-04 (+294d) |  | 0d → 45.75d |
| MOD-IRN-FC-56 | Cover and Access Arrangement Flow Meter Chamber for Irrigation Network Zone 2 | 2026-01-15 → 2026-11-04 (+293d) | 2026-01-18 → 2026-11-08 (+294d) |  | 0d → 45.75d |
| 3 | **Rainwater Collection Ponds Zone 2** | 2026-01-19 → 2025-10-27 (-84d) | 2026-12-08 → 2027-04-01 (+114d) |  |  |
| 10 | **Excavation for Rainwater Drainage Pond** | 2026-01-19 → 2026-05-01 (+102d) | 2026-03-14 → 2027-01-09 (+301d) |  |  |
| 11 | **Deep excavation, backfill, disposal for pond formation** | 2026-01-19 → 2026-05-01 (+102d) | 2026-03-14 → 2027-01-09 (+301d) |  |  |
| MOD-RCP-ER-8 | Mark and fence pond boundary for Rainwater Collection Ponds Zone 2 | 2026-01-19 → 2026-05-01 A (+102d) | 2026-01-21 → 2026-09-01 A (+223d) | 0% → 100% | 79.8d → none |
| MOD-RCP-ER-18 | Excavate in layers to final depth for Rainwater Collection Ponds Zone 2 | 2026-01-22 → 2026-06-08 A (+137d) | 2026-02-04 → 2027-01-02 (+332d) | 0% → 90% | 338.8d → 92d |
| MOD-RCP-ER-28 | Dewater during excavation for Rainwater Collection Ponds Zone 2 | 2026-02-05 → 2026-07-07 A (+152d) | 2026-02-10 → 2027-01-03 (+327d) | 0% → 90% | 338.8d → 92d |
| MOD-RCP-ER-38 | Place warning tapes for Rainwater Collection Ponds Zone 2 | 2026-02-11 → 2026-07-21 A (+160d) | 2026-02-19 → 2027-01-03 (+318d) | 0% → 90% | 338.8d → 92d |
| MOD-RCP-ER-48 | Dispose of rock/materials to approved dump area for Rainwater Collection Ponds Zone 2 | 2026-02-19 → 2026-08-01 A (+163d) | 2026-03-05 → 2027-01-04 (+305d) | 0% → 90% | 338.8d → 92d |
| MOD-RCP-ER-58 | Backfill selected areas as per design for Rainwater Collection Ponds Zone 2 | 2026-03-07 → 2027-01-04 (+303d) | 2026-03-10 → 2027-01-06 (+302d) |  | 338.8d → 92d |
| MOD-RCP-ER-68 | Final trimming and profiling for Rainwater Collection Ponds Zone 2 | 2026-03-10 → 2027-01-06 (+302d) | 2026-03-14 → 2027-01-09 (+301d) |  | 338.8d → 92d |
| 1 | **General Site Preparation** | 2026-01-22 → 2025-10-27 (-87d) | 2026-06-08 → 2026-09-08 (+92d) |  |  |
| MOD-RCP-GS-83 | Earthwork excavation (other than topsoil or rock) - Zone 2 (2 Ponds) for Rainwater Collection Ponds Zone 2 | 2026-04-15 → 2025-10-27 A (-170d) | 2026-05-10 → 2026-09-01 A (+114d) | 0% → 100% | 66.8d → none |
| MOD-RCP-GS-43 | Site demarcation for Rainwater Collection Ponds Zone 2 | 2026-01-22 → 2025-10-29 A (-85d) | 2026-02-15 → 2025-11-04 A (-103d) | 0% → 100% | 80.8d → none |
| MOD-RCP-GS-53 | Clearing and grubbing for Rainwater Collection Ponds Zone 2 | 2026-02-16 → 2025-10-30 A (-109d) | 2026-03-30 → 2025-11-08 A (-142d) | 0% → 100% | 80.8d → none |
| MOD-RCP-GS-93 | Transport and disposal to approved locations - Zone 2 (2 Ponds) for Rainwater Collection Ponds Zone 2 | 2026-05-10 → 2025-11-24 A (-167d) | 2026-06-08 → 2026-09-08 A (+92d) | 0% → 100% | 118.8d → none |
| 2 | **Backfilling Works** | 2026-06-08 → 2025-11-17 (-203d) | 2026-08-23 → 2027-01-21 (+151d) |  |  |
| MOD-RCP-BW-15 | Place in layers not exceeding 300mm for Rainwater Collection Ponds Zone 2 | 2026-06-25 → 2025-11-17 A (-220d) | 2026-07-20 → 2027-01-10 (+174d) | 0% → 80% | 209.8d → 81d |
| MOD-RCP-BW-5 | Select material from excavation or import approved material for Rainwater Collection Ponds Zone 2 | 2026-06-08 → 2025-11-18 A (-202d) | 2026-06-25 → 2027-01-05 (+194d) | 0% → 90% | 118.8d → 36.8d |
| MOD-RCP-BW-25 | Compact each layer to required density for Rainwater Collection Ponds Zone 2 | 2026-07-20 → 2025-11-25 A (-237d) | 2026-08-12 → 2027-01-14 (+155d) | 0% → 80% | 209.8d → 81d |
| MOD-RCP-BW-35 | Conduct field density tests for Rainwater Collection Ponds Zone 2 | 2026-08-12 → 2026-08-01 A (-11d) | 2026-08-17 → 2027-01-16 (+152d) | 0% → 70% | 209.8d → 81d |
| MOD-RCP-BW-45 | Final leveling and approval for Rainwater Collection Ponds Zone 2 | 2026-08-17 → 2027-01-16 (+152d) | 2026-08-23 → 2027-01-21 (+151d) |  | 209.8d → 81d |
| 12 | **Geotextile & Bedding** | 2026-06-25 → 2026-01-04 (-172d) | 2026-09-10 → 2027-03-23 (+194d) |  |  |
| 13 | **Installation of geotextile lining and coarse sand bedding** | 2026-06-25 → 2026-01-04 (-172d) | 2026-09-10 → 2027-03-23 (+194d) |  |  |
| MOD-RCP-GB-5 | Trim subgrade to required level for Rainwater Collection Ponds Zone 2 | 2026-06-25 → 2026-01-04 A (-172d) | 2026-07-04 → 2026-01-21 A (-164d) | 0% → 100% | 118.8d → none |
| MOD-RCP-GB-15 | Lay HDPE geotextile membrane over compacted soil for Rainwater Collection Ponds Zone 2 | 2026-07-04 → 2026-01-17 A (-168d) | 2026-07-28 → 2027-01-19 (+175d) | 0% → 40% | 118.8d → 36.8d |
| MOD-RCP-GB-25 | Place 500mm thick coarse sand bedding for Rainwater Collection Ponds Zone 2 | 2026-07-28 → 2026-07-22 A (-6d) | 2026-08-22 → 2027-02-17 (+179d) |  | 118.8d → 36.8d |
| MOD-RCP-GB-35 | Compact and level bedding for Rainwater Collection Ponds Zone 2 | 2026-08-22 → 2027-02-17 (+179d) | 2026-09-10 → 2027-03-23 (+194d) |  | 118.8d → 36.8d |
| 3 | **Concrete Structures** | 2026-09-10 → 2026-03-02 (-192d) | 2026-11-03 → 2027-04-01 (+149d) |  |  |
| 4 | **Construction of pond slab, walls, vertical structures** | 2026-09-10 → 2026-03-02 (-192d) | 2026-11-03 → 2027-04-01 (+149d) |  |  |

| ID | Task | Start | Finish | Duration | Complete | Total float |
| --- | --- | --- | --- | --- | --- | --- |
| MOD-RCP-CS-10 | Clean the subgrade for Rainwater Collection Ponds Zone 2 | 2026-09-10 → 2026-03-02 A (-192d) | 2026-09-13 → 2026-03-05 A (-192d) |  | 0% → 100% | 118.8d → none |
| MOD-RCP-CS-20 | Lay 100mm thick blinding (C15) for Rainwater Collection Ponds Zone 2 | 2026-09-13 → 2026-03-04 A (-193d) | 2026-09-16 → 2026-03-09 A (-191d) |  | 0% → 100% | 118.8d → none |
| MOD-RCP-CS-40 | Cast base slab with C20 concrete (300–500mm thick) for Rainwater Collection Ponds Zone 2 | 2026-09-27 → 2026-03-10 A (-201d) | 2026-10-01 → 2026-03-14 A (-201d) |  | 0% → 100% | 118.8d → none |
| MOD-RCP-CS-50 | Construct sub-walls (150–300mm thick) for Rainwater Collection Ponds Zone 2 | 2026-10-01 → 2026-03-14 A (-201d) | 2026-10-10 → 2026-03-28 A (-196d) |  | 0% → 100% | 118.8d → none |
| MOD-RCP-CS-60 | Construct vertical structures (0.2–1.22m wide) for Rainwater Collection Ponds Zone 2 | 2026-10-10 → 2026-03-21 A (-203d) | 2026-10-20 → 2026-03-31 A (-203d) |  | 0% → 100% | 118.8d → none |
| MOD-RCP-CS-70 | Remove formwork after curing for Rainwater Collection Ponds Zone 2 | 2026-10-20 → 2026-04-02 A (-201d) | 2026-10-24 → 2026-04-07 A (-200d) |  | 0% → 100% | 148.8d → none |
| MOD-RCP-CS-80 | Apply power floating finish for Rainwater Collection Ponds Zone 2 | 2026-10-24 → 2026-04-06 A (-201d) | 2026-10-26 → 2026-04-12 A (-197d) |  | 0% → 100% | 148.8d → none |
| MOD-RCP-CS-90 | Apply waterproofing, bitumen, screed, perimeter lining for Rainwater Collection Ponds Zone 2 | 2026-10-26 → 2026-04-09 A (-200d) | 2026-11-03 → 2026-04-20 A (-197d) |  | 0% → 100% | 148.8d → none |
| MOD-RCP-CS-30 | Install formwork and reinforcement for Rainwater Collection Ponds Zone 2 | 2026-09-16 → 2026-09-20 A (+4d) | 2026-09-27 → 2027-04-01 (+186d) |  |  | 118.8d → 36.8d |
| 5 | **Energy Dissipation & Siphon Structures** | 2026-10-20 → 2025-12-09 (-315d) | 2026-12-08 → 2026-01-15 (-327d) |  |  |  |
| 6 | **Siphon pipes, energy dissipators, and associated civil works** | 2026-10-20 → 2025-12-09 (-315d) | 2026-12-08 → 2026-01-15 (-327d) |  |  |  |
| MOD-RCP-ED-8 | Excavate for low-level areas for Rainwater Collection Ponds Zone 2 | 2026-10-20 → 2025-12-09 A (-315d) | 2026-10-24 → 2025-12-13 A (-315d) |  | 0% → 100% | 118.8d → none |
| MOD-RCP-ED-18 | Lay granular bedding and compact for Rainwater Collection Ponds Zone 2 | 2026-10-24 → 2025-12-14 A (-314d) | 2026-11-05 → 2025-12-17 A (-323d) |  | 0% → 100% | 118.8d → none |
| MOD-RCP-ED-28 | Install siphon pipe with DI 90° bends for Rainwater Collection Ponds Zone 2 | 2026-11-05 → 2025-12-16 A (-324d) | 2026-11-17 → 2025-12-22 A (-330d) |  | 0% → 100% | 118.8d → none |
| MOD-RCP-ED-38 | Place coarse gravel tamping for Rainwater Collection Ponds Zone 2 | 2026-11-17 → 2025-12-23 A (-329d) | 2026-11-26 → 2025-12-27 A (-334d) |  | 0% → 100% | 118.8d → none |
| MOD-RCP-ED-48 | Construct reinforced concrete side walls for Rainwater Collection Ponds Zone 2 | 2026-11-26 → 2025-12-27 A (-334d) | 2026-12-03 → 2026-01-03 A (-334d) |  | 0% → 100% | 118.8d → none |
| MOD-RCP-ED-58 | Brickwork and finishing for Rainwater Collection Ponds Zone 2 | 2026-12-03 → 2026-01-06 A (-331d) | 2026-12-06 → 2026-01-10 A (-330d) |  | 0% → 100% | 118.8d → none |
| MOD-RCP-ED-68 | Install energy dissipators (gabion baffles, riprap) for Rainwater Collection Ponds Zone 2 | 2026-12-06 → 2026-01-11 A (-329d) | 2026-12-08 → 2026-01-15 A (-327d) |  | 0% → 100% | 118.8d → none |
| 4 | **Road Crossing Zone 2** | 2026-01-22 → 2026-12-31 (+343d) | 2026-10-13 → 2027-08-02 (+293d) |  |  |  |
| 14 | **uPVC Road Crossing Pipes** | 2026-01-22 → 2026-12-31 (+343d) | 2026-06-22 → 2027-04-07 (+289d) |  |  |  |
| 15 | **Installation of uPVC pipes of various diameters crossing roadways** | 2026-01-22 → 2026-12-31 (+343d) | 2026-06-22 → 2027-04-07 (+289d) |  |  |  |
| MOD-ROC-PV-10 | Demarcation and traffic diversion (if required) for Road Crossing Zone 2 | 2026-01-22 → 2026-12-31 (+343d) | 2026-01-28 → 2027-01-07 (+344d) |  |  | 79.8d → -131d |
| MOD-ROC-PV-20 | Saw cutting and removal of asphalt (if applicable) for Road Crossing Zone 2 | 2026-01-29 → 2027-01-07 (+343d) | 2026-02-11 → 2027-01-21 (+344d) |  |  | 79.8d → -131d |
| MOD-ROC-PV-30 | Excavation across road width to required depth for Road Crossing Zone 2 | 2026-02-12 → 2027-01-21 (+343d) | 2026-03-26 → 2027-02-02 (+313d) | 21d → 10d |  | 79.8d → -131d |
| MOD-ROC-PV-40 | Preparation of trench base with compacted bedding for Road Crossing Zone 2 | 2026-03-26 → 2027-02-02 (+313d) | 2026-04-13 → 2027-02-09 (+302d) | 15d → 5d |  | 79.8d → -131d |
| MOD-ROC-PV-50 | Laying of uPVC pipe (300mm, 315mm, 400mm, 600mm dia) for Road Crossing Zone 2 | 2026-04-13 → 2027-02-09 (+302d) | 2026-05-07 → 2027-03-02 (+299d) | 21d → 10d |  | 79.8d → -131d |
| MOD-ROC-PV-60 | Placement of supports and protection around the pipe for Road Crossing Zone 2 | 2026-05-07 → 2027-03-02 (+299d) | 2026-05-19 → 2027-03-15 (+300d) | 10d → 5d |  | 79.8d → -131d |
| MOD-ROC-PV-70 | Testing of installed pipeline for Road Crossing Zone 2 | 2026-05-19 → 2027-03-16 (+301d) | 2026-05-26 → 2027-03-22 (+300d) |  |  | 79.8d → -131d |
| MOD-ROC-PV-80 | Backfilling and compaction in layers for Road Crossing Zone 2 | 2026-05-26 → 2027-03-23 (+301d) | 2026-06-15 → 2027-03-31 (+289d) | 13d → 8d |  | 79.8d → -131d |
| MOD-ROC-PV-90 | Reinstatement of road surface for Road Crossing Zone 2 | 2026-06-15 → 2027-04-01 (+290d) | 2026-06-22 → 2027-04-07 (+289d) |  |  | 79.8d → -131d |
| 16 | **GRP Road Crossing Pipes** | 2026-06-22 → 2027-04-08 (+290d) | 2026-10-13 → 2027-08-02 (+293d) |  |  |  |
| 17 | **Installation of GRP pipes (800mm–1000mm dia) for road crossings** | 2026-06-22 → 2027-04-08 (+290d) | 2026-10-13 → 2027-08-02 (+293d) |  |  |  |
| MOD-ROC-GR-10 | Set out location and coordinate with road authority for Road Crossing Zone 2 | 2026-06-22 → 2027-04-08 (+290d) | 2026-06-28 → 2027-04-13 (+289d) |  |  | 79.8d → -131d |
| MOD-ROC-GR-20 | Excavate trench across road at designed depth for Road Crossing Zone 2 | 2026-06-28 → 2027-04-14 (+290d) | 2026-07-12 → 2027-04-27 (+289d) |  |  | 79.8d → -131d |
| MOD-ROC-GR-30 | Lay compacted granular bedding for Road Crossing Zone 2 | 2026-07-12 → 2027-04-28 (+290d) | 2026-07-30 → 2027-05-20 (+294d) |  |  | 79.8d → -131d |
| MOD-ROC-GR-40 | Install GRP pipe (800mm & 1000mm dia) for Road Crossing Zone 2 | 2026-07-30 → 2027-05-22 (+296d) | 2026-08-24 → 2027-06-14 (+294d) |  |  | 79.8d → -131d |
| MOD-ROC-GR-50 | Provide structural supports and closure at both ends for Road Crossing Zone 2 | 2026-08-24 → 2027-06-15 (+295d) | 2026-09-03 → 2027-06-24 (+294d) |  |  | 79.8d → -131d |
| MOD-ROC-GR-60 | Perform leak testing as per specifications for Road Crossing Zone 2 | 2026-09-03 → 2027-06-26 (+296d) | 2026-09-09 → 2027-06-30 (+294d) |  |  | 79.8d → -131d |
| MOD-ROC-GR-70 | Backfill and compact in layers for Road Crossing Zone 2 | 2026-09-09 → 2027-07-01 (+295d) | 2026-09-28 → 2027-07-18 (+293d) |  |  | 79.8d → -131d |
| MOD-ROC-GR-80 | Reinstate road surface (asphalt/concrete) for Road Crossing Zone 2 | 2026-09-28 → 2027-07-19 (+294d) | 2026-10-07 → 2027-07-27 (+293d) |  |  | 79.8d → -131d |
| MOD-ROC-GR-90 | Final inspection and approval by relevant authority for Road Crossing Zone 2 | 2026-10-07 → 2027-07-28 (+294d) | 2026-10-13 → 2027-08-02 (+293d) |  |  | 79.8d → -131d |
| 6 | **Zone 1** | 2025-10-13 → 2025-07-22 (-83d) | 2027-02-08 → 2027-10-19 (+253d) |  |  |  |
| 1 | **Sewerage Network Zone 1** | 2025-10-13 → 2025-11-03 (+21d) | 2026-12-28 → 2027-03-08 (+70d) |  |  |  |
| 1 | **Pipework: Supply, Installation, and Testing** | 2025-10-19 → 2025-11-03 (+15d) | 2026-02-03 → 2026-10-10 (+249d) |  |  |  |
| 1 | **UPVC Pipes Installation (150mm–315mm)** | 2025-10-19 → 2025-11-03 (+15d) | 2026-01-26 → 2026-03-18 (+51d) |  |  |  |
| MOD-SWN-PW-665 | Excavation and Trenching UPVC for Sewerage Network Zone 1 | 2025-10-19 → 2025-11-03 A (+15d) | 2025-11-08 → 2026-01-01 A (+54d) |  | 0% → 100% | 376.8d → none |
| MOD-SWN-PW-675 | Lean Concrete / Bedding UPVC for Sewerage Network Zone 1 | 2025-11-09 → 2025-11-05 A (-4d) | 2025-11-29 → 2026-01-13 A (+45d) |  | 0% → 100% | 376.8d → none |
| MOD-SWN-PW-625 | UPVC Pipes Installation (150mm–315mm) UPVC for Sewerage Network Zone 1 | 2025-11-30 → 2025-11-06 A (-24d) | 2025-12-12 → 2026-01-21 A (+40d) |  | 0% → 100% | 376.8d → none |
| MOD-SWN-PW-695 | Coating / Wrapping UPVC for Sewerage Network Zone 1 | 2025-12-28 → 2025-11-30 A (-28d) | 2026-01-11 → 2026-02-11 A (+31d) |  | 0% → 100% | 384.8d → none |
| MOD-SWN-PW-655 | Backfilling & Warrning Tape UPVC for Sewerage Network Zone 1 | 2026-01-12 → 2026-02-01 A (+20d) | 2026-01-26 → 2026-03-18 A (+51d) |  | 0% → 100% | 384.8d → none |
| MOD-SWN-PW-685 | Test (Pressure - Slope) UPVC for Sewerage Network Zone 1 | 2025-12-13 → 2026-02-01 A (+50d) | 2025-12-27 → 2026-02-01 A (+36d) |  | 0% → 100% | 384.8d → none |
| 2 | **GRP Pipes Installation (400mm–700mm)** | 2025-10-19 → 2025-11-17 (+29d) | 2026-02-03 → 2026-02-28 (+25d) |  |  |  |
| MOD-SWN-PW-715 | Excavation and Trenching GRP for Sewerage Network Zone 1 | 2025-10-19 → 2025-11-17 A (+29d) | 2025-11-08 → 2026-01-20 A (+73d) |  | 0% → 100% | 376.8d → none |
| MOD-SWN-PW-725 | Lean Concrete / Bedding GRP for Sewerage Network Zone 1 | 2025-11-09 → 2025-11-22 A (+13d) | 2025-11-29 → 2026-01-30 A (+62d) |  | 0% → 100% | 376.8d → none |
| MOD-SWN-PW-635 | GRP Pipes Installation (400mm–700mm) GRP for Sewerage Network Zone 1 | 2025-11-30 → 2025-11-29 A (-1d) | 2025-12-20 → 2026-02-01 A (+43d) |  | 0% → 100% | 376.8d → none |
| MOD-SWN-PW-745 | Coating / Wrapping GRP for Sewerage Network Zone 1 | 2026-01-05 → 2025-12-02 A (-34d) | 2026-01-19 → 2026-02-27 A (+39d) |  | 0% → 100% | 376.8d → none |
| MOD-SWN-PW-735 | Test (Pressure - Slope) GRP for Sewerage Network Zone 1 | 2025-12-21 → 2026-02-02 A (+43d) | 2026-01-04 → 2026-02-10 A (+37d) |  | 0% → 100% | 376.8d → none |
| MOD-SWN-PW-705 | Backfilling & Warrning Tape GRP for Sewerage Network Zone 1 | 2026-01-20 → 2026-02-04 A (+15d) | 2026-02-03 → 2026-02-28 A (+25d) |  | 0% → 100% | 376.8d → none |
| 3 | **HDPE Pressure Pipes Installation (250mm–630mm)** | 2025-10-19 → 2025-11-22 (+34d) | 2026-02-03 → 2026-10-10 (+249d) |  |  |  |
| MOD-SWN-PW-765 | Excavation and Trenching HDPE for Sewerage Network Zone 1 | 2025-10-19 → 2025-11-22 A (+34d) | 2025-11-08 → 2026-10-03 (+329d) |  | 0% → 98% | 376.8d → 115.1d |
| MOD-SWN-PW-645 | HDPE Pressure Pipes Installation (250mm–630mm) HDPE for Sewerage Network Zone 1 | 2025-11-30 → 2025-11-27 A (-3d) | 2025-12-20 → 2026-10-05 (+289d) |  | 0% → 97% | 376.8d → 115.1d |
| MOD-SWN-PW-795 | Coating / Wrapping HDPE for Sewerage Network Zone 1 | 2026-01-05 → 2025-12-11 A (-25d) | 2026-01-19 → 2026-10-06 (+260d) |  | 0% → 95% | 376.8d → 159.35d |
| MOD-SWN-PW-775 | Lean Concrete / Bedding HDPE for Sewerage Network Zone 1 | 2025-11-09 → 2026-02-02 A (+85d) | 2025-11-29 → 2026-10-04 (+309d) |  | 0% → 95% | 376.8d → 115.1d |
| MOD-SWN-PW-785 | Test (Pressure - Slope) HDPE for Sewerage Network Zone 1 | 2025-12-21 → 2026-02-03 A (+44d) | 2026-01-04 → 2026-10-05 (+274d) |  | 0% → 95% | 376.8d → 159.35d |
| MOD-SWN-PW-755 | Backfilling & Warrning Tape HDPE for Sewerage Network Zone 1 | 2026-01-20 → 2026-02-05 A (+16d) | 2026-02-03 → 2026-10-10 (+249d) |  | 0% → 75% | 376.8d → 159.35d |
| 2 | **Fittings and Valves** | 2025-12-21 → 2026-10-05 (+288d) | 2026-01-20 → 2026-11-05 (+289d) |  |  |  |
| MOD-SWN-FV-001 | Supply & Installation of HDPE Elbows for Sewerage Network Zone 1 | 2025-12-21 → 2026-10-05 (+288d) | 2025-12-27 → 2026-10-12 (+289d) |  |  | 310.8d → 99.1d |
| MOD-SWN-FV-002 | Gate Valves Installation for Sewerage Network Zone 1 | 2025-12-28 → 2026-10-12 (+288d) | 2025-12-31 → 2026-10-17 (+290d) |  |  | 310.8d → 99.1d |
| MOD-SWN-FV-003 | Drain Valves Installation for Sewerage Network Zone 1 | 2026-01-01 → 2026-10-17 (+289d) | 2026-01-05 → 2026-10-21 (+289d) |  |  | 310.8d → 99.1d |
| MOD-SWN-FV-004 | Air Breather & Air Release Valves Installation for Sewerage Network Zone 1 | 2026-01-06 → 2026-10-21 (+288d) | 2026-01-17 → 2026-11-02 (+289d) |  |  | 310.8d → 99.1d |

| ID | Task | Start | Finish | Duration | Complete | Total float |
| --- | --- | --- | --- | --- | --- | --- |
| MOD-SWN-FV-005 | Jointing & Piping Accessories Installation for Sewerage Network Zone 1 | 2026-01-18 → 2026-11-02 (+288d) | 2026-01-20 → 2026-11-05 (+289d) |  |  | 310.8d → 99.1d |
| 3 | **Valve & Flow Meter Chambers** | 2025-10-19 → 2026-06-01 (+225d) | 2026-02-10 → 2026-12-17 (+310d) |  |  |  |
| 1 | **Valve Chambers Construction** | 2025-10-19 → 2026-06-01 (+225d) | 2026-01-04 → 2026-11-29 (+329d) |  |  |  |
| MOD-SWN-PW-1135 | Excavation Valve Chamber for Sewerage Network Zone 1 | 2025-10-19 → 2026-06-01 A (+225d) | 2025-11-08 → 2026-10-13 (+339d) |  | 0% → 50% | 369.8d → 90.7d |
| MOD-SWN-PW-1145 | Lean Concrete / Bedding Valve Chamber for Sewerage Network Zone 1 | 2025-11-09 → 2026-06-09 A (+212d) | 2025-11-29 → 2026-10-26 (+331d) |  | 0% → 40% | 369.8d → 90.7d |
| MOD-SWN-VF-164 | Valve Chambers Construction Valve Chamber for Sewerage Network Zone 1 | 2025-11-30 → 2026-06-23 A (+205d) | 2025-12-05 → 2026-10-30 (+329d) |  | 0% → 30% | 369.8d → 90.7d |
| MOD-SWN-PW-1155 | Test Valve Chamber for Sewerage Network Zone 1 | 2025-12-06 → 2026-10-30 (+328d) | 2025-12-20 → 2026-11-14 (+329d) |  |  | 406.8d → 109.4d |
| MOD-SWN-PW-1125 | Backfilling Valve Chamber for Sewerage Network Zone 1 | 2025-12-21 → 2026-11-14 (+328d) | 2026-01-04 → 2026-11-29 (+329d) |  |  | 406.8d → 109.4d |
| 2 | **Water Drain Chambers Construction** | 2025-10-19 → 2026-07-11 (+265d) | 2026-01-23 → 2026-11-27 (+308d) |  |  |  |
| MOD-SWN-PW-1175 | Excavation Water Drain Chamber for Sewerage Network Zone 1 | 2025-10-19 → 2026-07-11 A (+265d) | 2025-11-08 → 2026-10-09 (+335d) |  | 0% → 70% | 375.8d → 103.3d |
| MOD-SWN-PW-1185 | Lean Concrete / Bedding Water Drain Chamber for Sewerage Network Zone 1 | 2025-11-09 → 2026-07-22 A (+255d) | 2025-11-29 → 2026-10-17 (+322d) |  | 0% → 60% | 375.8d → 103.3d |
| MOD-SWN-VF-174 | Water Drain Chambers Construction Water Drain Chamber for Sewerage Network Zone 1 | 2025-12-06 → 2026-07-29 A (+235d) | 2025-12-24 → 2026-11-06 (+317d) |  | 0% → 60% | 369.8d → 90.7d |
| MOD-SWN-PW-1195 | Test Water Drain Chamber for Sewerage Network Zone 1 | 2025-12-25 → 2026-08-01 A (+219d) | 2026-01-08 → 2026-11-12 (+308d) |  | 0% → 60% | 387.8d → 110.8d |
| MOD-SWN-PW-1165 | Backfilling Water Drain Chamber for Sewerage Network Zone 1 | 2026-01-09 → 2026-11-12 (+307d) | 2026-01-23 → 2026-11-27 (+308d) |  |  | 387.8d → 110.8d |
| 3 | **Discharge Chambers Construction** | 2025-10-19 → 2026-07-13 (+267d) | 2026-02-05 → 2026-12-15 (+313d) |  |  |  |
| MOD-SWN-PW-1215 | Excavation Discharge Chamber for Sewerage Network Zone 1 | 2025-10-19 → 2026-07-13 A (+267d) | 2025-11-08 → 2026-10-13 (+339d) |  | 0% → 50% | 394.8d → 102.5d |
| MOD-SWN-PW-1225 | Lean Concrete / Bedding Discharge Chamber for Sewerage Network Zone 1 | 2025-11-09 → 2026-07-14 A (+247d) | 2025-11-29 → 2026-10-26 (+331d) |  | 0% → 40% | 394.8d → 102.5d |
| MOD-SWN-VF-184 | Discharge Chambers Construction Discharge Chamber for Sewerage Network Zone 1 | 2025-12-25 → 2026-07-29 A (+216d) | 2026-01-06 → 2026-11-15 (+313d) |  | 0% → 30% | 369.8d → 90.7d |
| MOD-SWN-PW-1235 | Test Discharge Chamber for Sewerage Network Zone 1 | 2026-01-07 → 2026-11-16 (+313d) | 2026-01-21 → 2026-11-30 (+313d) |  |  | 374.8d → 92.7d |
| MOD-SWN-PW-1205 | Backfilling Discharge Chamber for Sewerage Network Zone 1 | 2026-01-22 → 2026-12-01 (+313d) | 2026-02-05 → 2026-12-15 (+313d) |  |  | 374.8d → 92.7d |
| 4 | **Flow Meter Chambers Construction** | 2025-10-19 → 2026-07-11 (+265d) | 2026-02-10 → 2026-12-17 (+310d) |  |  |  |
| MOD-SWN-PW-1255 | Excavation Flow Meter Chamber for Sewerage Network Zone 1 | 2025-10-19 → 2026-07-11 A (+265d) | 2025-11-08 → 2026-10-10 (+336d) |  | 0% → 63% | 407.8d → 118.53d |
| MOD-SWN-PW-1265 | Lean Concrete / Bedding Flow Meter Chamber for Sewerage Network Zone 1 | 2025-11-09 → 2026-07-28 A (+261d) | 2025-11-29 → 2026-10-19 (+324d) |  | 0% → 60% | 407.8d → 118.53d |
| MOD-SWN-VF-194 | Flow Meter Chambers Construction Flow Meter Chamber for Sewerage Network Zone 1 | 2026-01-07 → 2026-08-01 A (+206d) | 2026-01-11 → 2026-11-17 (+310d) |  | 0% → 60% | 369.8d → 90.7d |
| MOD-SWN-PW-1275 | Test Flow Meter Chamber for Sewerage Network Zone 1 | 2026-01-12 → 2026-11-18 (+310d) | 2026-01-26 → 2026-12-02 (+310d) |  |  | 369.8d → 90.7d |
| MOD-SWN-PW-1245 | Backfilling Flow Meter Chamber for Sewerage Network Zone 1 | 2026-01-27 → 2026-12-03 (+310d) | 2026-02-10 → 2026-12-17 (+310d) |  |  | 369.8d → 90.7d |
| 4 | **Manholes** | 2025-10-19 → 2025-12-31 (+73d) | 2026-01-08 → 2026-10-24 (+289d) |  |  |  |
| MOD-SWN-MH-005 | Depth Variation for Manholes for Sewerage Network Zone 1 | 2025-12-18 → 2025-12-31 A (+13d) | 2025-12-27 → 2026-01-05 A (+9d) |  | 0% → 100% | 331.8d → none |
| 1 | **1200mm GRP Manholes with Backdrop** | 2025-10-19 → 2026-01-01 (+74d) | 2025-12-24 → 2026-10-24 (+304d) |  |  |  |
| MOD-SWN-PW-1295 | Excavation 1.2m GRP for Sewerage Network Zone 1 | 2025-10-19 → 2026-01-01 A (+74d) | 2025-11-08 → 2026-10-03 (+329d) |  | 0% → 97% | 402.8d → 144.82d |
| MOD-SWN-PW-1305 | Lean Concrete / Bedding 1.2m GRP for Sewerage Network Zone 1 | 2025-11-09 → 2026-01-03 A (+55d) | 2025-11-13 → 2026-10-03 (+324d) |  | 0% → 96% | 402.8d → 144.82d |
| MOD-SWN-MH-105 | 1200mm GRP Manholes with Backdrop 1.2m GRP for Sewerage Network Zone 1 | 2025-11-14 → 2026-01-04 A (+51d) | 2025-12-04 → 2026-10-04 (+304d) |  | 0% → 95% | 402.8d → 144.82d |
| MOD-SWN-PW-1315 | Test 1.2m GRP for Sewerage Network Zone 1 | 2025-12-05 → 2026-10-04 (+303d) | 2025-12-09 → 2026-10-09 (+304d) |  |  | 417.8d → 144.82d |
| MOD-SWN-PW-1285 | Backfilling 1.2m GRP for Sewerage Network Zone 1 | 2025-12-10 → 2026-10-09 (+303d) | 2025-12-24 → 2026-10-24 (+304d) |  |  | 417.8d → 144.82d |
| 2 | **1500mm GRP Manholes (Standard & Backdrop)** | 2025-10-19 → 2026-01-03 (+76d) | 2025-12-29 → 2026-10-24 (+299d) |  |  |  |
| MOD-SWN-PW-1335 | Excavation 1.5m GRP for Sewerage Network Zone 1 | 2025-10-19 → 2026-01-03 A (+76d) | 2025-11-08 → 2026-10-03 (+329d) |  | 0% → 97% | 407.8d → 144.82d |
| MOD-SWN-PW-1345 | Lean Concrete / Bedding 1.5m GRP for Sewerage Network Zone 1 | 2025-11-09 → 2026-02-03 A (+86d) | 2025-11-13 → 2026-10-03 (+324d) |  | 0% → 96% | 407.8d → 144.82d |
| MOD-SWN-MH-115 | 1500mm GRP Manholes (Standard & Backdrop) 1.5m GRP for Sewerage Network Zone 1 | 2025-11-19 → 2026-02-14 A (+87d) | 2025-12-09 → 2026-10-04 (+299d) |  | 0% → 95% | 402.8d → 144.82d |
| MOD-SWN-PW-1355 | Test 1.5m GRP for Sewerage Network Zone 1 | 2025-12-10 → 2026-10-04 (+298d) | 2025-12-14 → 2026-10-09 (+299d) |  |  | 412.8d → 144.82d |
| MOD-SWN-PW-1325 | Backfilling 1.5m GRP for Sewerage Network Zone 1 | 2025-12-15 → 2026-10-09 (+298d) | 2025-12-29 → 2026-10-24 (+299d) |  |  | 412.8d → 144.82d |
| 3 | **1800mm GRP Manholes (Standard & Backdrop)** | 2025-10-19 → 2026-01-05 (+78d) | 2025-12-30 → 2026-10-24 (+298d) |  |  |  |
| MOD-SWN-PW-1375 | Excavation 1.8m GRP for Sewerage Network Zone 1 | 2025-10-19 → 2026-01-05 A (+78d) | 2025-11-08 → 2026-10-03 (+329d) |  | 0% → 97% | 412.8d → 144.82d |
| MOD-SWN-PW-1385 | Lean Concrete / Bedding 1.8m GRP for Sewerage Network Zone 1 | 2025-11-09 → 2026-02-03 A (+86d) | 2025-11-13 → 2026-10-03 (+324d) |  | 0% → 96% | 412.8d → 144.82d |
| MOD-SWN-MH-125 | 1800mm GRP Manholes (Standard & Backdrop) 1.8m GRP for Sewerage Network Zone 1 | 2025-11-24 → 2026-02-22 A (+90d) | 2025-12-10 → 2026-10-04 (+298d) |  | 0% → 95% | 402.8d → 144.82d |
| MOD-SWN-PW-1395 | Test 1.8m GRP for Sewerage Network Zone 1 | 2025-12-11 → 2026-10-04 (+297d) | 2025-12-15 → 2026-10-09 (+298d) |  |  | 411.8d → 145.02d |
| MOD-SWN-PW-1365 | Backfilling 1.8m GRP for Sewerage Network Zone 1 | 2025-12-16 → 2026-10-09 (+297d) | 2025-12-30 → 2026-10-24 (+298d) |  |  | 411.8d → 145.02d |
| 4 | **2000mm GRP Manholes (Standard & Backdrop)** | 2025-10-19 → 2026-01-06 (+79d) | 2026-01-08 → 2026-10-24 (+289d) |  |  |  |
| MOD-SWN-PW-1415 | Excavation 2m GRP for Sewerage Network Zone 1 | 2025-10-19 → 2026-01-06 A (+79d) | 2025-11-08 → 2026-10-03 (+329d) |  | 0% → 97% | 417.8d → 144.82d |
| MOD-SWN-PW-1425 | Lean Concrete / Bedding 2m GRP for Sewerage Network Zone 1 | 2025-11-09 → 2026-02-05 A (+88d) | 2025-11-13 → 2026-10-03 (+324d) |  | 0% → 96% | 417.8d → 144.82d |
| MOD-SWN-MH-135 | 2000mm GRP Manholes (Standard & Backdrop) 2m GRP for Sewerage Network Zone 1 | 2025-11-29 → 2026-02-25 A (+88d) | 2025-12-19 → 2026-10-04 (+289d) |  | 0% → 95% | 402.8d → 144.82d |
| MOD-SWN-PW-1435 | Test 2m GRP for Sewerage Network Zone 1 | 2025-12-20 → 2026-10-04 (+288d) | 2025-12-24 → 2026-10-09 (+289d) |  |  | 402.8d → 144.82d |
| MOD-SWN-PW-1405 | Backfilling 2m GRP for Sewerage Network Zone 1 | 2025-12-25 → 2026-10-09 (+288d) | 2026-01-08 → 2026-10-24 (+289d) |  |  | 402.8d → 144.82d |
| 5 | **Pumping Stations** | 2025-10-13 → 2026-01-01 (+80d) | 2026-12-28 → 2027-03-08 (+70d) |  |  |  |
| 9 | **Perimeter Walls & Gates** | 2025-10-13 → 2026-04-01 (+170d) | 2025-12-11 → 2026-10-07 (+300d) |  |  |  |
| MOD-SWN-PS-045 | Perimeter wall – PS1 for Sewerage Network Zone 1 | 2025-10-13 → 2026-04-01 A (+170d) | 2025-11-05 → 2026-06-17 A (+224d) |  | 0% → 100% | 241.8d → none |
| MOD-SWN-PS-046 | Perimeter wall – PS2 for Sewerage Network Zone 1 | 2025-11-06 → 2026-04-14 A (+159d) | 2025-11-30 → 2026-06-17 A (+199d) |  | 0% → 100% | 241.8d → none |
| MOD-SWN-PS-049 | Main entrance gates – Each PS for Sewerage Network Zone 1 | 2025-12-01 → 2026-07-30 A (+241d) | 2025-12-11 → 2026-10-07 (+300d) |  | 0% → 50% | 241.8d → 26.6d |
| MOD-SWN-PS-050 | Personal entrance gate – Each PS for Sewerage Network Zone 1 | 2025-12-01 → 2026-07-31 A (+242d) | 2025-12-04 → 2026-10-04 (+304d) |  | 0% → 50% | 241.8d → 26.6d |
| 1 | **Sewage Pumps and MCC System** | 2026-11-08 → 2026-10-29 (-10d) | 2026-12-28 → 2026-12-20 (-8d) |  |  |  |
| MOD-SWN-PS-002 | Sewage pumps incl. MCC, control panel, flow meters, transducers, switches, GRP piping, testing & installation – PS1 for | 2026-11-08 → 2026-10-29 (-10d) | 2026-11-19 → 2026-11-11 (-8d) |  |  | 38.6d → 57.35d |
| MOD-SWN-PS-003 | Sewage pumps (2x86 l/s, 1x325 l/s) incl. MCC – PS1 for Sewerage Network Zone 1 | 2026-11-21 → 2026-11-11 (-10d) | 2026-12-03 → 2026-11-25 (-8d) |  |  | 38.6d → 57.35d |
| MOD-SWN-PS-004 | Sewage pumps (2x55 l/s) incl. MCC – PS2 for Sewerage Network Zone 1 | 2026-12-05 → 2026-11-25 (-10d) | 2026-12-28 → 2026-12-20 (-8d) |  |  | 38.6d → 57.35d |
| 2 | **Odor Control System** | 2026-08-31 → 2026-11-30 (+91d) | 2026-10-25 → 2026-12-29 (+65d) |  |  |  |
| MOD-SWN-PS-0081 | Odor control system – All stations (PS1) for Sewerage Network Zone 1 | 2026-08-31 → 2026-11-30 (+91d) | 2026-09-28 → 2026-12-12 (+75d) | 23d → 10d |  | 53.8d → 0.79d |
| MOD-SWN-PS-0082 | Odor control system – All stations (PS2) for Sewerage Network Zone 1 | 2026-09-28 → 2026-12-12 (+75d) | 2026-10-25 → 2026-12-29 (+65d) | 23d → 15d |  | 93.8d → 48.79d |
| 3 | **In-Line Booster Stations** | 2026-09-28 → 2026-12-12 (+75d) | 2026-12-10 → 2027-03-08 (+88d) |  |  |  |
| MOD-SWN-PS-010 | In-Line Booster Stations - Civil Works for Sewerage Network Zone 1 | 2026-09-28 → 2026-12-12 (+75d) | 2026-10-22 → 2027-01-05 (+75d) |  |  | 53.8d → 0.79d |
| MOD-SWN-PS-1164 | In-Line Booster Stations - Mechanical Works for Sewerage Network Zone 1 | 2026-10-22 → 2027-01-05 (+75d) | 2026-11-16 → 2027-01-30 (+75d) |  |  | 53.8d → 0.79d |
| MOD-SWN-PS-1174 | In-Line Booster Stations - Electrical Works for Sewerage Network Zone 1 | 2026-11-16 → 2027-01-30 (+75d) | 2026-12-10 → 2027-03-08 (+88d) |  |  | 53.8d → 0.79d |
| 7 | **Engine/Motor Control Center Buildings** | 2025-11-06 → 2026-10-03 (+331d) | 2025-12-08 → 2026-10-11 (+307d) |  |  |  |

| ID | Task | Start | Finish | Duration | Complete | Total float |
| --- | --- | --- | --- | --- | --- | --- |
| MOD-SWN-PS-038 | MCC Building – PS1 for Sewerage Network Zone 1 | 2025-11-06 → 2026-10-03 (+331d) | 2025-11-06 → 2026-10-03 (+331d) |  |  | 312.8d → 61.6d |
| MOD-SWN-PS-039 | MCC Building – PS2 for Sewerage Network Zone 1 | 2025-12-01 → 2026-10-04 (+307d) | 2025-12-08 → 2026-10-11 (+307d) |  |  | 316.8d → 85.6d |
| 4 | **Valves and Fittings (General Supply & Installation)** | 2025-12-18 → 2026-10-29 (+315d) | 2025-12-23 → 2026-11-04 (+316d) |  |  |  |
| MOD-SWN-PS-012 | Valves, fittings & accessories – PS1 for Sewerage Network Zone 1 | 2025-12-18 → 2026-10-29 (+315d) | 2025-12-20 → 2026-11-01 (+316d) |  |  | 334.8d → 96.35d |
| MOD-SWN-PS-013 | 35mm raked bar SS 316 mesh – PS1 for Sewerage Network Zone 1 | 2025-12-21 → 2026-11-01 (+315d) | 2025-12-21 → 2026-11-02 (+316d) |  |  | 334.8d → 96.35d |
| MOD-SWN-PS-014 | Valves, fittings, flow meters – PS2 for Sewerage Network Zone 1 | 2025-12-22 → 2026-11-02 (+315d) | 2025-12-23 → 2026-11-04 (+316d) |  |  | 334.8d → 96.35d |
| 5 | **Tank with Canopy** | 2026-10-22 → 2027-01-05 (+75d) | 2026-11-07 → 2027-01-20 (+74d) |  |  |  |
| MOD-SWN-PS-019 | Tank with canopy (per specs/drawings) - PS1 for Sewerage Network Zone 1 | 2026-10-22 → 2027-01-05 (+75d) | 2026-11-07 → 2027-01-20 (+74d) |  |  | 82.8d → 29.79d |
| 6 | **Pump Well and Valve Chambers** | 2025-11-19 → 2026-10-04 (+319d) | 2026-01-29 → 2026-12-14 (+319d) |  |  |  |
| MOD-SWN-PS-022 | Pump well & valve chamber structure – PS1 (2 wells, 12m deep) for Sewerage Network Zone 1 | 2025-11-19 → 2026-10-04 (+319d) | 2025-12-03 → 2026-10-18 (+319d) |  |  | 302.8d → 61.6d |
| MOD-SWN-PS-023 | Concrete wall (5x5x1m) inside PS1 well for Sewerage Network Zone 1 | 2025-12-04 → 2026-10-19 (+319d) | 2025-12-11 → 2026-10-26 (+319d) |  |  | 302.8d → 61.6d |
| MOD-SWN-PS-027 | Pump well & valve chamber structure – PS2 (2 wells, 3m each, 9m depth) for Sewerage Network Zone 1 | 2025-12-04 → 2026-10-19 (+319d) | 2025-12-20 → 2026-11-03 (+318d) |  |  | 306.8d → 65.6d |
| MOD-SWN-PS-024 | 35 mm raked bar SS 316 network chamber PS1 for Sewerage Network Zone 1 | 2025-12-13 → 2026-10-27 (+318d) | 2025-12-13 → 2026-10-27 (+318d) |  |  | 302.8d → 61.6d |
| MOD-SWN-PS-025 | Valve chamber – PS1 for Sewerage Network Zone 1 | 2025-12-14 → 2026-10-28 (+318d) | 2025-12-20 → 2026-11-03 (+318d) |  |  | 302.8d → 61.6d |
| MOD-SWN-PS-026 | Flow meter chamber – PS1 for Sewerage Network Zone 1 | 2025-12-21 → 2026-11-04 (+318d) | 2025-12-24 → 2026-11-08 (+319d) |  |  | 302.8d → 61.6d |
| MOD-SWN-PS-028 | Valve chamber – PS2 for Sewerage Network Zone 1 | 2025-12-25 → 2026-11-09 (+319d) | 2026-01-12 → 2026-11-26 (+318d) |  |  | 302.8d → 61.6d |
| MOD-SWN-PS-029 | Flow meter chamber – PS2 for Sewerage Network Zone 1 | 2026-01-13 → 2026-11-28 (+319d) | 2026-01-29 → 2026-12-14 (+319d) |  |  | 302.8d → 61.6d |
| 8 | **Odor Control System Base/Plinth** | 2025-12-25 → 2026-10-25 (+304d) | 2025-12-31 → 2026-10-31 (+304d) |  |  |  |
| MOD-SWN-PS-043 | Concrete plinth below odor control – All PSs for Sewerage Network Zone 1 | 2025-12-25 → 2026-10-25 (+304d) | 2025-12-31 → 2026-10-31 (+304d) |  |  | 241.8d → 26.6d |
| 10 | **Lighting Works** | 2025-12-13 → 2026-01-01 (+19d) | 2025-12-27 → 2026-10-29 (+306d) |  |  |  |
| MOD-SWN-PS-052 | 250W Flood Light installation – Each PS for Sewerage Network Zone 1 | 2025-12-13 → 2026-01-01 A (+19d) | 2025-12-27 → 2026-10-29 (+306d) |  | 0% → 80% | 331.8d → 101d |
| 11 | **Duct Works** | 2025-12-04 → 2026-10-19 (+319d) | 2025-12-11 → 2026-10-26 (+319d) |  |  |  |
| MOD-SWN-PS-054 | uPVC duct Track 1 – All PSs for Sewerage Network Zone 1 | 2025-12-04 → 2026-10-19 (+319d) | 2025-12-04 → 2026-10-19 (+319d) |  |  | 331.8d → 100.6d |
| MOD-SWN-PS-055 | uPVC duct Track 2 – All PSs for Sewerage Network Zone 1 | 2025-12-06 → 2026-10-20 (+318d) | 2025-12-07 → 2026-10-21 (+318d) |  |  | 331.8d → 100.6d |
| MOD-SWN-PS-056 | uPVC duct Track 8 – All PSs for Sewerage Network Zone 1 | 2025-12-08 → 2026-10-22 (+318d) | 2025-12-11 → 2026-10-26 (+319d) |  |  | 331.8d → 100.6d |
| 12 | **Grounding Works** | 2025-12-13 → 2026-10-27 (+318d) | 2025-12-15 → 2026-10-29 (+318d) |  |  |  |
| MOD-SWN-PS-058 | Grounding pit – Each PS for Sewerage Network Zone 1 | 2025-12-13 → 2026-10-27 (+318d) | 2025-12-13 → 2026-10-27 (+318d) |  |  | 341.8d → 100.6d |
| MOD-SWN-PS-059 | 600x600 Cable pull pit – All PSs for Sewerage Network Zone 1 | 2025-12-14 → 2026-10-28 (+318d) | 2025-12-15 → 2026-10-29 (+318d) |  |  | 341.8d → 100.6d |
| 13 | **Landscaping / Interlocking Tiles** | 2025-12-06 → 2026-10-05 (+303d) | 2025-12-29 → 2026-10-28 (+303d) |  |  |  |
| MOD-SWN-PS-061 | Building perimeter interlock tiles for Sewerage Network Zone 1 | 2025-12-06 → 2026-10-05 (+303d) | 2025-12-24 → 2026-10-24 (+304d) |  |  | 241.8d → 26.6d |
| MOD-SWN-PS-062 | Entrance road paving tiles for Sewerage Network Zone 1 | 2025-12-25 → 2026-10-25 (+304d) | 2025-12-29 → 2026-10-28 (+303d) |  |  | 329.8d → 101.6d |
| 14 | **Pumping Station Internal Drainage Network** | 2025-12-01 → 2026-10-03 (+306d) | 2025-12-08 → 2026-10-10 (+306d) |  |  |  |
| MOD-SWN-PS-064 | Internal surface drainage channels for Sewerage Network Zone 1 | 2025-12-01 → 2026-10-03 (+306d) | 2025-12-08 → 2026-10-10 (+306d) |  |  | 347.8d → 117.6d |
| 12 | **Rainwater Drainage Network Zone 1** | 2025-10-19 → 2025-10-01 (-18d) | 2026-01-18 → 2026-11-02 (+288d) |  |  |  |
| 1 | **Pipe Laying Works** | 2025-10-19 → 2025-10-01 (-18d) | 2026-01-18 → 2026-10-11 (+266d) |  |  |  |
| 2 | **Supply & Installation of uPVC Pipes (250–300mm dia)** | 2025-10-19 → 2025-10-01 (-18d) | 2025-12-13 → 2026-10-06 (+297d) |  |  |  |
| MOD-RWN-PL-913 | Excavation to required depth UPVC for Rainwater Drainage Network Zone 1 | 2025-10-19 → 2025-10-01 A (-18d) | 2025-11-08 → 2026-10-04 (+330d) |  | 0% → 95% | 13d → -76.25d |
| MOD-RWN-PL-923 | Lean Concrete / Bedding UPVC for Rainwater Drainage Network Zone 1 | 2025-11-09 → 2025-10-05 A (-35d) | 2025-11-13 → 2026-10-04 (+325d) |  | 0% → 95% | 13d → -76.25d |
| MOD-RWN-PL-933 | Laying of uPVC pipe UPVC for Rainwater Drainage Network Zone 1 | 2025-11-14 → 2025-10-06 A (-39d) | 2025-12-02 → 2026-10-05 (+307d) |  | 0% → 95% | 13d → -76.25d |
| MOD-RWN-PL-953 | Test (Pressure-slope) UPVC for Rainwater Drainage Network Zone 1 | 2025-12-03 → 2026-01-07 A (+35d) | 2025-12-05 → 2026-10-05 (+304d) |  | 0% → 90% | 13d → -76.25d |
| MOD-RWN-PL-943 | Coating / Wrapping UPVC for Rainwater Drainage Network Zone 1 | 2025-12-06 → 2026-01-08 A (+33d) | 2025-12-07 → 2026-10-05 (+302d) |  | 0% → 90% | 42d → -70.81d |
| MOD-RWN-PL-963 | Backfilling & Warning Tape UPVC for Rainwater Drainage Network Zone 1 | 2025-12-06 → 2026-01-10 A (+35d) | 2025-12-13 → 2026-10-06 (+297d) |  | 0% → 85% | 36d → -71.81d |
| 3 | **Supply & Installation of GRP Pipes (350–800mm dia)** | 2025-10-19 → 2025-12-15 (+57d) | 2026-01-18 → 2026-08-16 (+210d) |  |  |  |
| MOD-RWN-PL-973 | Excavate short trench paths GRP for Rainwater Drainage Network Zone 1 | 2025-10-19 → 2025-12-15 A (+57d) | 2025-11-08 → 2026-04-01 A (+144d) |  | 0% → 100% | 0d → none |
| MOD-RWN-PL-983 | Lean Concrete / bedding material GRP for Rainwater Drainage Network Zone 1 | 2025-11-09 → 2025-12-23 A (+44d) | 2025-11-16 → 2026-07-05 A (+231d) |  | 0% → 100% | 0d → none |
| MOD-RWN-PL-993 | Lay & connect GRP for Rainwater Drainage Network Zone 1 | 2025-11-17 → 2025-12-29 A (+42d) | 2025-12-07 → 2026-07-08 A (+213d) |  | 0% → 100% | 0d → none |
| MOD-RWN-PL-1003 | Test (Pressure-slope) GRP for Rainwater Drainage Network Zone 1 | 2025-12-08 → 2026-01-09 A (+32d) | 2025-12-18 → 2026-08-15 A (+240d) |  | 0% → 100% | 0d → none |
| MOD-RWN-PL-1073 | Coating / Wrapping GRP for Rainwater Drainage Network Zone 1 | 2025-12-19 → 2026-01-10 A (+22d) | 2026-01-08 → 2026-08-16 A (+220d) |  | 0% → 100% | 0d → none |
| MOD-RWN-PL-1013 | Backfilling & compaction GRP for Rainwater Drainage Network Zone 1 | 2026-01-09 → 2026-01-11 A (+2d) | 2026-01-18 → 2026-08-16 A (+210d) |  | 0% → 100% | 0d → none |
| 4 | **uPVC Connection Pipes (150mm dia)** | 2025-10-19 → 2025-12-15 (+57d) | 2026-01-05 → 2026-10-11 (+279d) |  |  |  |
| MOD-RWN-PL-1023 | Excavate short trench paths UPVC Con. for Rainwater Drainage Network Zone 1 | 2025-10-19 → 2025-12-15 A (+57d) | 2025-10-23 → 2026-01-13 A (+82d) |  | 0% → 100% | 50d → none |
| MOD-RWN-PL-1033 | Lean Concrete / bedding material UPVC Con. for Rainwater Drainage Network Zone 1 | 2025-10-24 → 2025-12-23 A (+60d) | 2025-10-26 → 2026-06-18 A (+235d) |  | 0% → 100% | 50d → none |
| MOD-RWN-PL-1043 | Lay & connect UPVC Con. for Rainwater Drainage Network Zone 1 | 2025-12-03 → 2025-12-29 A (+26d) | 2025-12-10 → 2026-10-05 (+299d) |  | 0% → 92% | 13d → -76.25d |
| MOD-RWN-PL-1053 | Test (Pressure-slope) UPVC Con. for Rainwater Drainage Network Zone 1 | 2025-12-11 → 2026-01-08 A (+28d) | 2025-12-13 → 2026-10-06 (+297d) |  | 0% → 80% | 13d → -76.25d |
| MOD-RWN-PL-1083 | Coating / Wrapping UPVC Con. for Rainwater Drainage Network Zone 1 | 2025-12-14 → 2026-01-10 A (+27d) | 2026-01-03 → 2026-10-10 (+280d) |  | 0% → 80% | 13d → -76.25d |
| MOD-RWN-PL-1063 | Backfilling & compaction UPVC Con. for Rainwater Drainage Network Zone 1 | 2026-01-04 → 2026-01-11 A (+7d) | 2026-01-05 → 2026-10-11 (+279d) |  | 0% → 75% | 13d → -76.25d |
| 5 | **Precast Concrete Box Culverts** | 2025-10-19 → 2026-04-01 (+164d) | 2026-01-06 → 2026-11-01 (+299d) |  |  |  |
| 1 | **Box Culverts (500x500mm to 3500x800mm)** | 2025-10-19 → 2026-04-01 (+164d) | 2026-01-06 → 2026-10-27 (+294d) |  |  |  |
| MOD-RWN-PC-002 | Survey and layout alignment Box culvert for Rainwater Drainage Network Zone 1 | 2025-10-19 → 2026-04-01 A (+164d) | 2025-10-22 → 2026-04-08 A (+168d) |  | 0% → 100% | 0d → none |
| MOD-RWN-PC-504 | Setting Benchmark Box culvert for Rainwater Drainage Network Zone 1 | 2025-10-22 → 2026-04-04 A (+164d) | 2025-10-25 → 2026-04-10 A (+167d) |  | 0% → 100% | 0d → none |
| MOD-RWN-PC-514 | Cleaning Box culvert for Rainwater Drainage Network Zone 1 | 2025-10-25 → 2026-04-11 A (+168d) | 2025-10-30 → 2026-04-15 A (+167d) |  | 0% → 100% | 0d → none |
| MOD-RWN-PC-003 | Excavation to required depth Box culvert for Rainwater Drainage Network Zone 1 | 2025-11-02 → 2026-04-18 A (+167d) | 2025-11-10 → 2026-10-03 (+327d) | 7d → 5d | 0% → 85% | 0d → -83.51d |
| MOD-RWN-PC-524 | Testing Box culvert for Rainwater Drainage Network Zone 1 | 2025-10-30 → 2026-04-18 A (+170d) | 2025-11-02 → 2026-04-21 A (+170d) |  | 0% → 100% | 0d → none |
| MOD-RWN-PC-004 | Dewatering and trench shoring Box culvert for Rainwater Drainage Network Zone 1 | 2025-11-10 → 2026-04-22 A (+163d) | 2025-11-19 → 2026-10-04 (+319d) | 8d → 5d | 0% → 80% | 0d → -83.51d |
| MOD-RWN-PC-005 | Bedding preparation (gravel/lean concrete) Box culvert for Rainwater Drainage Network Zone 1 | 2025-11-19 → 2026-04-24 A (+156d) | 2025-11-24 → 2026-10-05 (+315d) |  | 0% → 70% | 0d → -83.51d |
| MOD-RWN-PC-006 | Installation of box culvert units Box culvert for Rainwater Drainage Network Zone 1 | 2025-11-25 → 2026-04-28 A (+154d) | 2025-12-11 → 2026-10-10 (+303d) | 15d → 8d | 0% → 70% | 0d → -83.51d |
| MOD-RWN-PC-007 | Alignment and joint sealing Box culvert for Rainwater Drainage Network Zone 1 | 2025-12-13 → 2026-05-05 A (+143d) | 2025-12-16 → 2026-10-12 (+300d) |  | 0% → 50% | 10d → -78.31d |
| MOD-RWN-PC-008 | Construct headwalls/wing walls (if needed) Box culvert for Rainwater Drainage Network Zone 1 | 2025-12-17 → 2026-10-12 (+299d) | 2025-12-25 → 2026-10-18 (+297d) | 8d → 5d |  | 10d → -78.31d |
| MOD-RWN-PC-009 | Backfilling and compaction Box culvert for Rainwater Drainage Network Zone 1 | 2025-12-27 → 2026-10-18 (+295d) | 2026-01-03 → 2026-10-24 (+294d) | 7d → 5d |  | 10d → -78.31d |
| MOD-RWN-PC-010 | Surface finishing Box culvert for Rainwater Drainage Network Zone 1 | 2026-01-04 → 2026-10-24 (+293d) | 2026-01-06 → 2026-10-27 (+294d) |  |  | 10d → -78.31d |

| ID | Task | Start | Finish | Duration | Complete | Total float |
| --- | --- | --- | --- | --- | --- | --- |
| 2 | **Tube Culverts at Road Intersections** | 2025-11-10 → 2026-04-01 (+142d) | 2026-01-04 → 2026-10-21 (+290d) |  |  |  |
| MOD-RWN-PC-012 | Traffic control setup Tube culvert for Rainwater Drainage Network Zone 1 | 2025-11-10 → 2026-04-01 A (+142d) | 2025-11-12 → 2026-04-05 A (+144d) |  | 0% → 100% | 12.9d → none |
| MOD-RWN-PC-013 | Trench excavation under road Tube culvert for Rainwater Drainage Network Zone 1 | 2025-11-12 → 2026-04-08 A (+147d) | 2025-11-24 → 2026-04-30 A (+157d) |  | 0% → 100% | 12.9d → none |
| MOD-RWN-PC-014 | Pipe bedding and twin pipe alignment Tube culvert for Rainwater Drainage Network Zone 1 | 2025-11-24 → 2026-05-12 A (+169d) | 2025-12-01 → 2026-10-06 (+309d) |  | 0% → 50% | 12.9d → -73.81d |
| MOD-RWN-PC-015 | Pipe laying and jointing Tube culvert for Rainwater Drainage Network Zone 1 | 2025-12-01 → 2026-05-24 A (+174d) | 2025-12-25 → 2026-10-12 (+291d) | 21d → 10d | 0% → 50% | 12.9d → -73.81d |
| MOD-RWN-PC-016 | Backfilling and road reinstatement Tube culvert for Rainwater Drainage Network Zone 1 | 2025-12-25 → 2026-10-12 (+291d) | 2026-01-04 → 2026-10-21 (+290d) |  |  | 12.9d → -73.81d |
| 3 | **Box Culverts at Road Intersections** | 2025-11-12 → 2026-04-13 (+152d) | 2026-01-01 → 2026-11-01 (+304d) |  |  |  |
| MOD-RWN-PC-018 | Traffic diversion and barricading for Rainwater Drainage Network Zone 1 | 2025-11-12 → 2026-04-13 A (+152d) | 2025-11-30 → 2026-04-21 A (+142d) |  | 0% → 100% | 14.9d → none |
| MOD-RWN-PC-019 | Deep trench excavation with shoring for Rainwater Drainage Network Zone 1 | 2025-11-30 → 2026-05-16 A (+167d) | 2025-12-01 → 2026-10-03 (+306d) |  | 0% → 82% | 14.9d → -82.74d |
| MOD-RWN-PC-020 | Place bedding material for Rainwater Drainage Network Zone 1 | 2025-12-01 → 2026-09-05 A (+278d) | 2025-12-02 → 2026-10-04 (+306d) |  | 0% → 25% | 14.9d → -82.74d |
| MOD-RWN-PC-021 | Install precast box culvert for Rainwater Drainage Network Zone 1 | 2025-12-02 → 2026-10-04 (+306d) | 2025-12-07 → 2026-10-08 (+305d) |  |  | 14.9d → -82.74d |
| MOD-RWN-PC-022 | Construct connection chambers (if needed) for Rainwater Drainage Network Zone 1 | 2025-12-07 → 2026-10-08 (+305d) | 2025-12-08 → 2026-10-10 (+306d) |  |  | 14.9d → -82.74d |
| MOD-RWN-PC-023 | Joint treatment and testing for Rainwater Drainage Network Zone 1 | 2025-12-08 → 2026-10-10 (+306d) | 2025-12-22 → 2026-10-21 (+303d) | 12d → 10d |  | 14.9d → -82.74d |
| MOD-RWN-PC-024 | Backfilling and surface reinstatement for Rainwater Drainage Network Zone 1 | 2025-12-22 → 2026-10-21 (+303d) | 2026-01-01 → 2026-11-01 (+304d) |  |  | 14.9d → -82.74d |
| 4 | **Manholes** | 2025-11-25 → 2026-01-01 (+37d) | 2026-01-18 → 2026-11-02 (+288d) |  |  |  |
| 1 | **Circular GRP Manholes (1200–1800mm dia)** | 2025-11-25 → 2026-01-01 (+37d) | 2026-01-18 → 2026-10-24 (+279d) |  |  |  |
| MOD-RWN-MH-002 | Excavate to full manhole depth Circular Manhole for Rainwater Drainage Network Zone 1 | 2025-11-25 → 2026-01-01 A (+37d) | 2025-11-30 → 2026-07-16 A (+228d) |  | 0% → 100% | 0d → none |
| MOD-RWN-MH-003 | Dewatering and safety barriers Circular Manhole for Rainwater Drainage Network Zone 1 | 2025-12-01 → 2026-01-01 A (+31d) | 2025-12-11 → 2026-10-08 (+301d) |  | 0% → 85% | 0d → -75.16d |
| MOD-RWN-MH-004 | Concrete base construction Circular Manhole for Rainwater Drainage Network Zone 1 | 2025-12-13 → 2026-01-03 A (+21d) | 2025-12-17 → 2026-10-10 (+297d) |  | 0% → 70% | 0d → -75.16d |
| MOD-RWN-MH-005 | Install GRP manhole shaft sections Circular Manhole for Rainwater Drainage Network Zone 1 | 2025-12-18 → 2026-01-06 A (+19d) | 2026-01-01 → 2026-10-15 (+287d) |  | 0% → 65% | 0d → -75.16d |
| MOD-RWN-MH-006 | Place slab and cover frame Circular Manhole for Rainwater Drainage Network Zone 1 | 2026-01-03 → 2026-01-11 A (+8d) | 2026-01-08 → 2026-10-18 (+283d) |  | 0% → 60% | 0d → -75.16d |
| MOD-RWN-MH-007 | Waterproofing Circular Manhole for Rainwater Drainage Network Zone 1 | 2026-01-10 → 2026-01-12 A (+2d) | 2026-01-14 → 2026-10-21 (+280d) |  | 0% → 50% | 0d → -75.16d |
| MOD-RWN-MH-008 | Backfilling and compaction Circular Manhole for Rainwater Drainage Network Zone 1 | 2026-01-15 → 2026-01-13 A (-2d) | 2026-01-18 → 2026-10-24 (+279d) |  | 0% → 40% | 0d → -75.16d |
| 3 | **Concrete Manholes for 1500x1500 Box Pipes** | 2025-11-25 → 2026-01-01 (+37d) | 2026-01-17 → 2026-10-26 (+282d) |  |  |  |
| MOD-RWN-MH-018 | Excavation Concrete Manhole 1.5x1.5 for Rainwater Drainage Network Zone 1 | 2025-11-25 → 2026-01-01 A (+37d) | 2025-11-30 → 2026-07-17 A (+229d) |  | 0% → 100% | 7d → none |
| MOD-RWN-MH-019 | Base slab and wall shuttering Concrete Manhole 1.5x1.5 for Rainwater Drainage Network Zone 1 | 2025-12-01 → 2026-01-03 A (+33d) | 2025-12-08 → 2026-10-08 (+304d) |  | 0% → 80% | 7d → -77.86d |
| MOD-RWN-MH-020 | Wall reinforcement and casting Concrete Manhole 1.5x1.5 for Rainwater Drainage Network Zone 1 | 2025-12-09 → 2026-02-15 A (+68d) | 2025-12-17 → 2026-10-11 (+298d) |  | 0% → 75% | 7d → -77.86d |
| MOD-RWN-MH-021 | Roof slab with openings Concrete Manhole 1.5x1.5 for Rainwater Drainage Network Zone 1 | 2025-12-18 → 2026-02-17 A (+61d) | 2025-12-23 → 2026-10-12 (+293d) |  | 0% → 65% | 7d → -77.86d |
| MOD-RWN-MH-022 | Masonry/benching works inside Concrete Manhole 1.5x1.5 for Rainwater Drainage Network Zone 1 | 2025-12-24 → 2026-02-21 A (+59d) | 2025-12-28 → 2026-10-14 (+290d) |  | 0% → 50% | 7d → -77.86d |
| MOD-RWN-MH-023 | Install cover and frame Concrete Manhole 1.5x1.5 for Rainwater Drainage Network Zone 1 | 2026-01-05 → 2026-02-24 A (+50d) | 2026-01-11 → 2026-10-20 (+282d) |  | 0% → 20% | 1d → -77.86d |
| MOD-RWN-MH-024 | Backfill in layers Concrete Manhole 1.5x1.5 for Rainwater Drainage Network Zone 1 | 2026-01-12 → 2026-10-20 (+281d) | 2026-01-17 → 2026-10-26 (+282d) |  |  | 1d → -77.86d |
| 2 | **Concrete Manholes for 1000x1000 Box Pipes** | 2025-11-25 → 2026-01-01 (+37d) | 2026-01-12 → 2026-11-02 (+294d) |  |  |  |
| MOD-RWN-MH-010 | Excavation Concrete Manhole 1x1 for Rainwater Drainage Network Zone 1 | 2025-11-25 → 2026-01-01 A (+37d) | 2025-12-01 → 2026-10-08 (+311d) |  | 0% → 80% | 5d → -83.51d |
| MOD-RWN-MH-011 | Base slab and wall shuttering Concrete Manhole 1x1 for Rainwater Drainage Network Zone 1 | 2025-12-02 → 2026-02-01 A (+61d) | 2025-12-06 → 2026-10-10 (+308d) |  | 0% → 60% | 5d → -83.51d |
| MOD-RWN-MH-012 | Wall reinforcement and casting Concrete Manhole 1x1 for Rainwater Drainage Network Zone 1 | 2025-12-07 → 2026-04-01 A (+115d) | 2025-12-14 → 2026-10-13 (+303d) |  | 0% → 60% | 5d → -83.51d |
| MOD-RWN-MH-013 | Roof slab with openings Concrete Manhole 1x1 for Rainwater Drainage Network Zone 1 | 2025-12-15 → 2026-04-06 A (+112d) | 2025-12-23 → 2026-10-18 (+299d) |  | 0% → 50% | 5d → -83.51d |
| MOD-RWN-MH-014 | Masonry/benching works inside Concrete Manhole 1x1 for Rainwater Drainage Network Zone 1 | 2025-12-24 → 2026-04-21 A (+118d) | 2026-01-04 → 2026-10-25 (+294d) |  | 0% → 40% | 5d → -83.51d |
| MOD-RWN-MH-015 | Install cover and frame Concrete Manhole 1x1 for Rainwater Drainage Network Zone 1 | 2026-01-05 → 2026-10-25 (+293d) | 2026-01-08 → 2026-10-29 (+294d) |  |  | 5d → -83.51d |
| MOD-RWN-MH-016 | Backfill in layers Concrete Manhole 1x1 for Rainwater Drainage Network Zone 1 | 2026-01-10 → 2026-10-29 (+292d) | 2026-01-12 → 2026-11-02 (+294d) |  |  | 5d → -83.51d |
| 2 | **Chambers and Catch Basins** | 2025-11-25 → 2025-12-28 (+33d) | 2026-01-18 → 2026-10-10 (+265d) |  |  |  |
| 1 | **Gully Outfalls** | 2025-11-25 → 2025-12-31 (+36d) | 2026-01-12 → 2026-02-28 (+47d) |  |  |  |
| MOD-RWN-CC-002 | Identify discharge zones Gully Outfall for Rainwater Drainage Network Zone 1 | 2025-11-25 → 2025-12-31 A (+36d) | 2025-11-29 → 2026-02-28 A (+91d) |  | 0% → 100% | 5d → none |
| MOD-RWN-CC-003 | Excavate outfall channel Gully Outfall for Rainwater Drainage Network Zone 1 | 2025-11-30 → 2026-01-01 A (+32d) | 2025-12-09 → 2026-01-27 A (+49d) |  | 0% → 100% | 5d → none |
| MOD-RWN-CC-004 | Place concrete apron or pipes Gully Outfall for Rainwater Drainage Network Zone 1 | 2025-12-10 → 2026-01-05 A (+26d) | 2025-12-27 → 2026-02-01 A (+36d) |  | 0% → 100% | 5d → none |
| MOD-RWN-CC-005 | Provide slope protection (riprap) Gully Outfall for Rainwater Drainage Network Zone 1 | 2025-12-28 → 2026-01-28 A (+31d) | 2026-01-05 → 2026-02-09 A (+35d) |  | 0% → 100% | 5d → none |
| MOD-RWN-CC-006 | Compact and shape terrain Gully Outfall for Rainwater Drainage Network Zone 1 | 2026-01-06 → 2026-01-29 A (+23d) | 2026-01-12 → 2026-02-25 A (+44d) |  | 0% → 100% | 5d → none |
| 2 | **Rainwater Catch Basins** | 2025-12-13 → 2025-12-28 (+15d) | 2026-01-14 → 2026-10-10 (+269d) |  |  |  |
| MOD-RWN-CC-008 | Excavate pit area Catch Basin for Rainwater Drainage Network Zone 1 | 2025-12-13 → 2025-12-28 A (+15d) | 2025-12-18 → 2026-03-01 A (+73d) |  | 0% → 100% | 0d → none |
| MOD-RWN-CC-009 | Lay bedding and place chamber Catch Basin for Rainwater Drainage Network Zone 1 | 2025-12-20 → 2026-01-05 A (+16d) | 2026-01-01 → 2026-03-14 A (+72d) |  | 0% → 100% | 0d → none |
| MOD-RWN-CC-010 | Connect lateral inlet pipe Catch Basin for Rainwater Drainage Network Zone 1 | 2026-01-03 → 2026-01-06 A (+3d) | 2026-01-06 → 2026-03-30 A (+83d) |  | 0% → 100% | 0d → none |
| MOD-RWN-CC-011 | Cover with grating Catch Basin for Rainwater Drainage Network Zone 1 | 2026-01-07 → 2026-01-26 A (+19d) | 2026-01-12 → 2026-06-22 A (+161d) |  | 0% → 100% | 3d → none |
| MOD-RWN-CC-012 | Backfill and surface finish Catch Basin for Rainwater Drainage Network Zone 1 | 2026-01-13 → 2026-05-02 A (+109d) | 2026-01-14 → 2026-10-10 (+269d) |  | 0% → 96% | 3d → -63.39d |
| 3 | **Precast Chambers for Absorption Pits** | 2025-12-13 → 2026-01-01 (+19d) | 2026-01-18 → 2026-03-24 (+65d) |  |  |  |
| MOD-RWN-CC-014 | Excavate pit area Absorption Pit for Rainwater Drainage Network Zone 1 | 2025-12-13 → 2026-01-01 A (+19d) | 2025-12-20 → 2026-03-02 A (+72d) |  | 0% → 100% | 0d → none |
| MOD-RWN-CC-015 | Install base slab and precast chamber Absorption Pit for Rainwater Drainage Network Zone 1 | 2025-12-21 → 2026-01-07 A (+17d) | 2025-12-31 → 2026-03-09 A (+68d) |  | 0% → 100% | 0d → none |
| MOD-RWN-CC-016 | Connect outlet/inlet piping Absorption Pit for Rainwater Drainage Network Zone 1 | 2026-01-01 → 2026-01-16 A (+15d) | 2026-01-06 → 2026-03-14 A (+67d) |  | 0% → 100% | 0d → none |
| MOD-RWN-CC-017 | Waterproofing and protection Absorption Pit for Rainwater Drainage Network Zone 1 | 2026-01-07 → 2026-01-18 A (+11d) | 2026-01-13 → 2026-03-19 A (+65d) |  | 0% → 100% | 0d → none |
| MOD-RWN-CC-018 | Backfill and compact Absorption Pit for Rainwater Drainage Network Zone 1 | 2026-01-14 → 2026-02-01 A (+18d) | 2026-01-18 → 2026-03-24 A (+65d) |  | 0% → 100% | 0d → none |
| 3 | **Gully Outfalls to Swales** | 2025-12-20 → 2025-12-31 (+11d) | 2026-01-18 → 2026-10-13 (+268d) |  |  |  |
| 1 | **Gully Outfalls to Swales** | 2025-12-20 → 2025-12-31 (+11d) | 2026-01-07 → 2026-10-11 (+277d) |  |  |  |
| MOD-RWN-GO-002 | Identify swale discharge zones Gully Outfall to Swales for Rainwater Drainage Network Zone 1 | 2025-12-20 → 2025-12-31 A (+11d) | 2025-12-21 → 2026-01-24 A (+34d) |  | 0% → 100% | 9d → none |
| MOD-RWN-GO-003 | Excavate outfall channel Gully Outfall to Swales for Rainwater Drainage Network Zone 1 | 2025-12-22 → 2026-01-03 A (+12d) | 2025-12-25 → 2026-06-18 A (+175d) |  | 0% → 100% | 9d → none |
| MOD-RWN-GO-004 | Place concrete apron or pipes Gully Outfall to Swales for Rainwater Drainage Network Zone 1 | 2025-12-27 → 2026-01-07 A (+11d) | 2025-12-31 → 2026-10-10 (+283d) |  | 0% → 95% | 9d → -64.64d |
| MOD-RWN-GO-005 | Provide slope protection (riprap) Gully Outfall to Swales for Rainwater Drainage Network Zone 1 | 2026-01-01 → 2026-02-01 A (+31d) | 2026-01-05 → 2026-10-10 (+278d) |  | 0% → 90% | 9d → -64.64d |
| MOD-RWN-GO-006 | Compact and shape terrain Gully Outfall to Swales for Rainwater Drainage Network Zone 1 | 2026-01-06 → 2026-04-02 A (+86d) | 2026-01-07 → 2026-10-11 (+277d) |  | 0% → 66% | 9d → -64.64d |
| 2 | **Riprap Works & Protection** | 2026-01-03 → 2026-02-01 (+29d) | 2026-01-18 → 2026-10-13 (+268d) |  |  |  |
| MOD-RWN-GO-008 | Lay filter fabric/membrane for Rainwater Drainage Network Zone 1 | 2026-01-03 → 2026-02-01 A (+29d) | 2026-01-04 → 2026-10-10 (+279d) |  | 0% → 80% | 0d → -67.03d |
| MOD-RWN-GO-009 | Place riprap/stone layer for Rainwater Drainage Network Zone 1 | 2026-01-05 → 2026-02-28 A (+54d) | 2026-01-12 → 2026-10-12 (+273d) |  | 0% → 74% | 0d → -67.03d |
| MOD-RWN-GO-010 | Compact edges for Rainwater Drainage Network Zone 1 | 2026-01-13 → 2026-04-01 A (+78d) | 2026-01-15 → 2026-10-13 (+271d) |  | 0% → 50% | 0d → -67.03d |
| MOD-RWN-GO-011 | Ensure hydraulic flow direction for Rainwater Drainage Network Zone 1 | 2026-01-17 → 2026-05-01 A (+104d) | 2026-01-18 → 2026-05-06 A (+108d) |  | 0% → 100% | 0d → none |

| ID | Task | Start | Finish | Complete | Total float |
| --- | --- | --- | --- | --- | --- |
| 6 | **Backfilling & Bedding** | 2025-11-02 → 2026-01-01 (+60d) | 2026-01-18 → 2026-10-19 (+274d) |  |  |
| 1 | **Backfilling Materials (Type A – 201–700mm Pipes)** | 2025-11-10 → 2026-01-01 (+52d) | 2026-01-18 → 2026-10-13 (+268d) |  |  |
| MOD-RWN-BB-002 | Place granular bedding under pipe for Rainwater Drainage Network Zone 1 | 2025-11-10 → 2026-01-01 A (+52d) | 2025-11-20 → 2026-10-03 (+317d) | 0% → 99% | 0d → -77.71d |
| MOD-RWN-BB-003 | Lay and align pipe for Rainwater Drainage Network Zone 1 | 2025-11-20 → 2026-02-01 A (+73d) | 2025-12-15 → 2026-10-04 (+293d) | 0% → 99% | 0d → -66.45d |
| MOD-RWN-BB-004 | Backfill up to spring line for Rainwater Drainage Network Zone 1 | 2025-12-15 → 2026-02-10 A (+57d) | 2025-12-30 → 2026-10-04 (+278d) | 0% → 98% | 0d → -66.45d |
| MOD-RWN-BB-005 | Compact layer-wise for Rainwater Drainage Network Zone 1 | 2025-12-30 → 2026-02-17 A (+49d) | 2026-01-10 → 2026-10-04 (+267d) | 0% → 98% | 0d → -66.45d |
| MOD-RWN-BB-006 | Final fill to subgrade level for Rainwater Drainage Network Zone 1 | 2026-01-12 → 2026-10-06 (+267d) | 2026-01-18 → 2026-10-13 (+268d) |  | 0d → -66.45d |
| 2 | **Gravel Bedding & Filter Cloth for uPVC Drain Pipes** | 2025-11-02 → 2026-02-03 (+93d) | 2026-01-18 → 2026-10-19 (+274d) |  |  |
| MOD-RWN-BB-008 | Line trench with filter cloth for Rainwater Drainage Network Zone 1 | 2025-11-02 → 2026-02-03 A (+93d) | 2025-11-13 → 2026-10-03 (+324d) | 0% → 98% | 0d → -72d |
| MOD-RWN-BB-009 | Place and compact gravel bedding for Rainwater Drainage Network Zone 1 | 2025-11-13 → 2026-02-09 A (+88d) | 2025-11-27 → 2026-10-03 (+310d) | 0% → 98% | 0d → -72d |
| MOD-RWN-BB-010 | Lay pipe within gravel zone for Rainwater Drainage Network Zone 1 | 2025-11-27 → 2026-02-17 A (+82d) | 2025-12-21 → 2026-10-03 (+286d) | 0% → 98% | 0d → -72d |
| MOD-RWN-BB-011 | Wrap filter cloth above pipe for Rainwater Drainage Network Zone 1 | 2025-12-21 → 2026-02-21 A (+62d) | 2026-01-04 → 2026-10-05 (+274d) | 0% → 90% | 0d → -72d |
| MOD-RWN-BB-012 | Final fill and trench restoration for Rainwater Drainage Network Zone 1 | 2026-01-05 → 2026-10-05 (+273d) | 2026-01-18 → 2026-10-19 (+274d) |  | 0d → -72d |
| 13 | **Potable Water Network Zone 1** | 2025-10-19 → 2025-09-09 (-40d) | 2026-01-17 → 2026-11-29 (+316d) |  |  |
| 1 | **Pipe Installation Works** | 2025-10-19 → 2025-09-09 (-40d) | 2025-12-14 → 2026-10-04 (+294d) |  |  |
| MOD-PWN-PI-373 | Trench Excavation for Potable Water Network Zone 1 | 2025-10-19 → 2025-09-09 A (-40d) | 2025-11-08 → 2026-01-16 A (+69d) | 0% → 100% | 11d → none |
| MOD-PWN-PI-383 | Lean Concrete / Pipe Bedding Preparation for Potable Water Network Zone 1 | 2025-11-09 → 2025-09-10 A (-60d) | 2025-11-12 → 2026-10-03 (+325d) | 0% → 97% | 35d → 87.63d |
| MOD-PWN-PI-393 | HDPE Pipe Laying (200 mm to 710 mm) for Potable Water Network Zone 1 | 2025-11-13 → 2025-09-13 A (-61d) | 2025-12-03 → 2026-10-03 (+304d) | 0% → 97% | 35d → 87.63d |
| MOD-PWN-PI-413 | Coating / Wrapping for Potable Water Network Zone 1 | 2025-12-07 → 2025-11-04 A (-33d) | 2025-12-11 → 2026-10-04 (+297d) | 0% → 96% | 35d → 87.63d |
| MOD-PWN-PI-403 | Test (Pressure-slope) for Potable Water Network Zone 1 | 2025-12-04 → 2025-11-10 A (-24d) | 2025-12-06 → 2026-10-03 (+301d) | 0% → 96% | 35d → 87.63d |
| MOD-PWN-PI-423 | Backfilling & Warrning Tape for Potable Water Network Zone 1 | 2025-12-12 → 2025-11-18 A (-24d) | 2025-12-14 → 2026-10-04 (+294d) | 0% → 80% | 35d → 87.63d |
| 2 | **Valve Installation & Chambers** | 2025-11-09 → 2026-02-01 (+84d) | 2025-12-27 → 2026-10-06 (+283d) |  |  |
| MOD-PWN-VC-004 | Valve Chamber Excavation for Potable Water Network Zone 1 | 2025-11-09 → 2026-02-01 A (+84d) | 2025-11-17 → 2026-10-03 (+320d) | 0% → 93% | 10d → 46.92d |
| MOD-PWN-VC-005 | RC Slab, Walls, or Precast Chambers for Potable Water Network Zone 1 | 2025-11-19 → 2026-02-05 A (+78d) | 2025-11-26 → 2026-10-04 (+312d) | 0% → 91% | 39d → 73.41d |
| MOD-PWN-VC-001 | Gate Valves (225–710 mm) for Potable Water Network Zone 1 | 2025-12-07 → 2026-02-14 A (+69d) | 2025-12-20 → 2026-10-04 (+288d) | 0% → 91% | 19d → 73.52d |
| MOD-PWN-VC-003 | 3-exit (2 x 2.5-inch and 1 x 4-inch) dry vacuum cylinder detachable fire nozzle for Potable Water Network Zone 1 | 2025-12-07 → 2026-02-14 A (+69d) | 2025-12-20 → 2026-10-04 (+288d) | 0% → 91% | 19d → 73.52d |
| MOD-PWN-VC-002 | Butterfly Valves (355, 500, 630 mm) for Potable Water Network Zone 1 | 2025-12-07 → 2026-02-15 A (+70d) | 2025-12-20 → 2026-10-04 (+288d) | 0% → 91% | 19d → 73.52d |
| MOD-PWN-VC-006 | Fixing Covers, Gratings, Frames for Potable Water Network Zone 1 | 2025-12-21 → 2026-03-24 A (+93d) | 2025-12-24 → 2026-10-04 (+284d) | 0% → 80% | 19d → 73.41d |
| MOD-PWN-VC-007 | Tagging & Painting for Potable Water Network Zone 1 | 2025-12-25 → 2026-10-04 (+283d) | 2025-12-27 → 2026-10-06 (+283d) |  | 19d → 73.41d |
| 3 | **Flow Meter Installation** | 2025-11-09 → 2026-05-01 (+173d) | 2026-01-17 → 2026-11-29 (+316d) |  |  |
| MOD-PWN-FM-001 | Chamber Excavation (280 mm, 300 mm, 500 mm, 800 mm) for Potable Water Network Zone 1 | 2025-11-09 → 2026-05-01 A (+173d) | 2025-11-24 → 2026-05-06 A (+163d) | 0% → 100% | 13d → none |
| MOD-PWN-FM-002 | RC or Precast Chamber Construction for Potable Water Network Zone 1 | 2025-11-25 → 2026-05-07 A (+163d) | 2025-12-03 → 2026-10-07 (+308d) | 0% → 44% | 13d → 46.92d |
| MOD-PWN-FM-003 | Flowmeter Installation & Pipe Integration for Potable Water Network Zone 1 | 2025-12-18 → 2026-10-29 (+315d) | 2026-01-04 → 2026-11-16 (+316d) |  | 1d → 28.15d |
| MOD-PWN-FM-004 | Wiring/Cabling if applicable for Potable Water Network Zone 1 | 2026-01-05 → 2026-11-16 (+315d) | 2026-01-13 → 2026-11-25 (+316d) |  | 1d → 28.15d |
| MOD-PWN-FM-005 | Calibration & Commissioning for Potable Water Network Zone 1 | 2026-01-14 → 2026-11-25 (+315d) | 2026-01-17 → 2026-11-29 (+316d) |  | 1d → 28.15d |
| 4 | **Washout & Air Valve Chambers** | 2025-11-09 → 2026-05-01 (+173d) | 2026-01-06 → 2026-10-13 (+280d) |  |  |
| MOD-PWN-WA-001 | Chamber Excavation (280 mm to 710 mm) for Potable Water Network Zone 1 | 2025-11-09 → 2026-05-01 A (+173d) | 2025-11-17 → 2026-05-07 A (+171d) | 0% → 100% | 10d → none |
| MOD-PWN-WA-002 | RC Blinding + Base + Walls for Potable Water Network Zone 1 | 2025-11-18 → 2026-05-09 A (+172d) | 2025-11-27 → 2026-08-16 A (+262d) | 0% → 100% | 10d → none |
| MOD-PWN-WA-003 | Pipe Work for Potable Water Network Zone 1 | 2025-11-29 → 2026-08-09 A (+253d) | 2025-12-11 → 2026-10-04 (+297d) | 0% → 90% | 10d → 68.3d |
| MOD-PWN-WA-004 | Washout (Valve + Outlet) Installation for Potable Water Network Zone 1 | 2025-12-13 → 2026-08-16 A (+246d) | 2025-12-21 → 2026-10-05 (+288d) | 0% → 80% | 10d → 68.3d |
| MOD-PWN-WA-005 | Air Valve Rooms (Valve + Outlet) Installation for Potable Water Network Zone 1 | 2025-12-22 → 2026-08-16 A (+237d) | 2025-12-29 → 2026-10-07 (+282d) | 0% → 70% | 10d → 68.3d |
| MOD-PWN-WA-006 | Covers, Ladders & Tags for Potable Water Network Zone 1 | 2025-12-30 → 2026-09-14 A (+258d) | 2026-01-03 → 2026-10-10 (+280d) | 0% → 70% | 10d → 68.3d |
| MOD-PWN-WA-007 | Backfilling & Final Finishing for Potable Water Network Zone 1 | 2026-01-04 → 2026-10-10 (+279d) | 2026-01-06 → 2026-10-13 (+280d) |  | 10d → 68.3d |
| 7 | **Irrigation Network Zone 1** | 2025-10-19 → 2025-11-04 (+16d) | 2026-01-18 → 2026-11-09 (+295d) |  |  |
| 1 | **Excavation, Pipe Laying & Backfilling** | 2025-10-19 → 2025-11-04 (+16d) | 2025-12-14 → 2026-10-03 (+293d) |  |  |
| MOD-IRN-EB-390 | Trench Excavation for Irrigation Network Zone 1 | 2025-10-19 → 2025-11-04 A (+16d) | 2025-11-08 → 2026-08-29 A (+294d) | 0% → 100% | 35d → none |
| MOD-IRN-EB-400 | Lean Concrete / Pipe Bedding with Type B Material for Irrigation Network Zone 1 | 2025-11-09 → 2025-11-04 A (-5d) | 2025-11-17 → 2026-10-03 (+320d) | 0% → 99% | 35d → 88.86d |
| MOD-IRN-EB-410 | HDPE Pipe Laying (125 mm to 630 mm) for Irrigation Network Zone 1 | 2025-11-18 → 2025-11-10 A (-8d) | 2025-12-08 → 2026-10-03 (+299d) | 0% → 99% | 35d → 88.86d |
| MOD-IRN-EB-420 | Test (Pressure-slope) for Irrigation Network Zone 1 | 2025-12-09 → 2026-01-01 A (+23d) | 2025-12-10 → 2026-10-03 (+297d) | 0% → 99% | 35d → 88.86d |
| MOD-IRN-EB-430 | Coating / Wrapping for Irrigation Network Zone 1 | 2025-12-11 → 2026-02-28 A (+79d) | 2025-12-12 → 2026-10-03 (+295d) | 0% → 99% | 35d → 88.86d |
| MOD-IRN-EB-440 | Backfilling & Warrning Tape for Irrigation Network Zone 1 | 2025-12-13 → 2026-03-03 A (+80d) | 2025-12-14 → 2026-10-03 (+293d) | 0% → 95% | 35d → 88.86d |
| 2 | **Valves and Appurtenances** | 2025-12-07 → 2026-02-01 (+56d) | 2025-12-29 → 2026-10-06 (+281d) |  |  |
| MOD-IRN-VA-001 | Supply & Installation of Valves (Gate Valve) for Irrigation Network Zone 1 | 2025-12-07 → 2026-02-01 A (+56d) | 2025-12-15 → 2026-10-03 (+292d) | 0% → 95% | 0d → 67.35d |
| MOD-IRN-VA-002 | Supply & Installation of Valves (Butterfly Valve) for Irrigation Network Zone 1 | 2025-12-11 → 2026-02-05 A (+56d) | 2025-12-21 → 2026-10-03 (+286d) | 0% → 95% | 0d → 67.35d |
| MOD-IRN-VA-003 | Installation of Flanges, Bolts, Collars, Nuts for Irrigation Network Zone 1 | 2025-12-22 → 2026-03-26 A (+94d) | 2025-12-24 → 2026-10-03 (+283d) | 0% → 92% | 0d → 67.35d |
| MOD-IRN-VA-005 | Support Brackets/Anchor Blocks for Irrigation Network Zone 1 | 2025-12-28 → 2026-04-01 A (+94d) | 2025-12-29 → 2026-10-06 (+281d) | 0% → 40% | 17d → 74.31d |
| MOD-IRN-VA-004 | Valve Pressure Testing for Irrigation Network Zone 1 | 2025-12-25 → 2026-07-05 A (+192d) | 2025-12-27 → 2026-10-04 (+281d) | 0% → 40% | 17d → 74.31d |
| 3 | **Valve Rooms** | 2025-12-25 → 2026-02-01 (+38d) | 2026-01-18 → 2026-10-07 (+262d) |  |  |
| MOD-IRN-VR-001 | Excavation for Valve Room Valve Chamber for Irrigation Network Zone 1 | 2025-12-25 → 2026-02-01 A (+38d) | 2025-12-28 → 2026-07-13 A (+197d) | 0% → 100% | 0d → none |
| MOD-IRN-VR-002 | Blinding Concrete Valve Chamber for Irrigation Network Zone 1 | 2025-12-29 → 2026-03-01 A (+62d) | 2025-12-30 → 2026-10-03 (+277d) | 0% → 95% | 0d → 73.12d |
| MOD-IRN-VR-003 | RCC Base Slab & Chamber Walls Valve Chamber for Irrigation Network Zone 1 | 2025-12-31 → 2026-03-04 A (+63d) | 2026-01-04 → 2026-10-04 (+273d) | 0% → 85% | 0d → 73.12d |
| MOD-IRN-VR-004 | Block Wall Construction (if any) Valve Chamber for Irrigation Network Zone 1 | 2026-01-05 → 2026-03-07 A (+61d) | 2026-01-08 → 2026-10-05 (+270d) | 0% → 79% | 0d → 73.12d |
| MOD-IRN-VR-005 | Installation of Valve inside the Room Valve Chamber for Irrigation Network Zone 1 | 2026-01-10 → 2026-04-05 A (+85d) | 2026-01-14 → 2026-10-06 (+265d) | 0% → 79% | 0d → 73.12d |
| MOD-IRN-VR-006 | Fixing Frame & Cover Valve Chamber for Irrigation Network Zone 1 | 2026-01-15 → 2026-07-11 A (+177d) | 2026-01-17 → 2026-10-06 (+262d) | 0% → 75% | 0d → 73.12d |
| MOD-IRN-VR-007 | Backfilling and Finishing Valve Chamber for Irrigation Network Zone 1 | 2026-01-18 → 2026-07-13 A (+176d) | 2026-01-18 → 2026-10-07 (+262d) | 0% → 50% | 0d → 73.12d |
| 4 | **Washout Chambers** | 2025-12-22 → 2026-05-01 (+130d) | 2026-01-18 → 2026-10-03 (+258d) |  |  |
| MOD-IRN-WC-001 | Excavation for Chamber Washout Chamber for Irrigation Network Zone 1 | 2025-12-22 → 2026-05-01 A (+130d) | 2025-12-28 → 2026-05-30 A (+153d) | 0% → 100% | 0d → none |
| MOD-IRN-WC-002 | Blinding Concrete Washout Chamber for Irrigation Network Zone 1 | 2025-12-29 → 2026-05-05 A (+127d) | 2025-12-31 → 2026-06-17 A (+168d) | 0% → 100% | 0d → none |
| MOD-IRN-WC-003 | Construction of RCC Base & Chamber Wall Washout Chamber for Irrigation Network Zone 1 | 2026-01-01 → 2026-05-09 A (+128d) | 2026-01-05 → 2026-06-17 A (+163d) | 0% → 100% | 0d → none |
| MOD-IRN-WC-004 | Washout Valve & Pipe Connection Washout Chamber for Irrigation Network Zone 1 | 2026-01-06 → 2026-05-11 A (+125d) | 2026-01-11 → 2026-07-27 A (+197d) | 0% → 100% | 0d → none |

| ID | Task | Start | Finish | Complete | Total float |
| --- | --- | --- | --- | --- | --- |
| MOD-IRN-WC-005 | Manhole Frame, Cover & Ladder Fixing Washout Chamber for Irrigation Network Zone 1 | 2026-01-12 → 2026-06-23 A (+162d) | 2026-01-17 → 2026-10-03 (+259d) | 0% → 97% | 0d → 76.77d |
| MOD-IRN-WC-006 | Backfilling & Reinstatement Washout Chamber for Irrigation Network Zone 1 | 2026-01-18 → 2026-07-04 A (+167d) | 2026-01-18 → 2026-10-03 (+258d) | 0% → 97% | 0d → 76.77d |
| 5 | **Air Valve Chambers** | 2025-12-22 → 2026-03-22 (+90d) | 2026-01-13 → 2026-07-27 (+195d) |  |  |
| MOD-IRN-AC-001 | Chamber Excavation Air Valve Chamber for Irrigation Network Zone 1 | 2025-12-22 → 2026-03-22 A (+90d) | 2025-12-28 → 2026-05-31 A (+154d) | 0% → 100% | 4d → none |
| MOD-IRN-AC-002 | Blinding & RCC Base Air Valve Chamber for Irrigation Network Zone 1 | 2025-12-29 → 2026-03-30 A (+91d) | 2026-01-01 → 2026-06-22 A (+172d) | 0% → 100% | 4d → none |
| MOD-IRN-AC-003 | Wall Casting / Blockwork Air Valve Chamber for Irrigation Network Zone 1 | 2026-01-03 → 2026-03-31 A (+87d) | 2026-01-06 → 2026-06-23 A (+168d) | 0% → 100% | 4d → none |
| MOD-IRN-AC-004 | Air Valve Installation (280–630 mm) Air Valve Chamber for Irrigation Network Zone 1 | 2026-01-07 → 2026-04-01 A (+84d) | 2026-01-11 → 2026-07-09 A (+179d) | 0% → 100% | 4d → none |
| MOD-IRN-AC-005 | Cover Fixing & Finishing Air Valve Chamber for Irrigation Network Zone 1 | 2026-01-12 → 2026-06-23 A (+162d) | 2026-01-13 → 2026-07-27 A (+195d) | 0% → 100% | 4d → none |
| 6 | **Flow Meter Chambers** | 2025-12-22 → 2026-04-13 (+112d) | 2026-01-18 → 2026-11-09 (+295d) |  |  |
| MOD-IRN-FC-001 | Chamber Excavation Flow Meter Chamber for Irrigation Network Zone 1 | 2025-12-22 → 2026-04-13 A (+112d) | 2025-12-30 → 2026-06-28 A (+180d) | 0% → 100% | 0d → none |
| MOD-IRN-FC-002 | RCC Base & Wall Construction Flow Meter Chamber for Irrigation Network Zone 1 | 2025-12-31 → 2026-05-19 A (+139d) | 2026-01-05 → 2026-08-03 A (+210d) | 0% → 100% | 0d → none |
| MOD-IRN-FC-003 | Flow Meter Installation (280, 300, 500 mm) Flow Meter Chamber for Irrigation Network Zone 1 | 2026-01-06 → 2026-07-01 A (+176d) | 2026-01-12 → 2026-11-05 (+297d) |  | 0d → 44.55d |
| MOD-IRN-FC-004 | Integration with Pipework Flow Meter Chamber for Irrigation Network Zone 1 | 2026-01-13 → 2026-07-02 A (+170d) | 2026-01-14 → 2026-11-05 (+295d) | 0% → 70% | 0d → 44.55d |
| MOD-IRN-FC-005 | Testing & Calibration Flow Meter Chamber for Irrigation Network Zone 1 | 2026-01-15 → 2026-11-05 (+294d) | 2026-01-17 → 2026-11-08 (+295d) |  | 0d → 44.55d |
| MOD-IRN-FC-006 | Cover and Access Arrangement Flow Meter Chamber for Irrigation Network Zone 1 | 2026-01-18 → 2026-11-08 (+294d) | 2026-01-18 → 2026-11-09 (+295d) |  | 0d → 44.55d |
| 4 | **Rainwater Collection Ponds Zone 1** | 2026-01-19 → 2025-07-22 (-181d) | 2027-02-08 → 2027-04-06 (+57d) |  |  |
| 10 | **Excavation for Rainwater Drainage Pond** | 2026-01-19 → 2025-07-22 (-181d) | 2026-03-14 → 2027-01-09 (+301d) |  |  |
| 11 | **Deep excavation, backfill, disposal for pond formation** | 2026-01-19 → 2025-07-22 (-181d) | 2026-03-14 → 2027-01-09 (+301d) |  |  |
| MOD-RCP-ER-002 | Mark and fence pond boundary for Rainwater Collection Ponds Zone 1 | 2026-01-19 → 2025-07-22 A (-181d) | 2026-01-21 → 2025-09-30 A (-113d) | 0% → 100% | 101.8d → none |
| MOD-RCP-ER-003 | Excavate in layers to final depth for Rainwater Collection Ponds Zone 1 | 2026-01-22 → 2025-07-22 A (-184d) | 2026-02-04 → 2025-09-30 A (-127d) | 0% → 100% | 338.8d → none |
| MOD-RCP-ER-004 | Dewater during excavation for Rainwater Collection Ponds Zone 1 | 2026-02-05 → 2025-11-30 A (-67d) | 2026-02-10 → 2027-01-02 (+326d) | 0% → 90% | 338.8d → 91.9d |
| MOD-RCP-ER-005 | Place warning tapes for Rainwater Collection Ponds Zone 1 | 2026-02-11 → 2025-12-10 A (-63d) | 2026-02-19 → 2027-01-03 (+318d) | 0% → 80% | 338.8d → 91.9d |
| MOD-RCP-ER-006 | Dispose of rock/materials to approved dump area for Rainwater Collection Ponds Zone 1 | 2026-02-19 → 2025-12-17 A (-64d) | 2026-03-05 → 2027-01-04 (+305d) | 0% → 80% | 338.8d → 91.9d |
| MOD-RCP-ER-007 | Backfill selected areas as per design for Rainwater Collection Ponds Zone 1 | 2026-03-07 → 2027-01-04 (+303d) | 2026-03-10 → 2027-01-06 (+302d) |  | 338.8d → 91.9d |
| MOD-RCP-ER-008 | Final trimming and profiling for Rainwater Collection Ponds Zone 1 | 2026-03-10 → 2027-01-06 (+302d) | 2026-03-14 → 2027-01-09 (+301d) |  | 338.8d → 91.9d |
| 1 | **General Site Preparation** | 2026-02-16 → 2025-07-22 (-209d) | 2026-08-20 → 2027-01-16 (+149d) |  |  |
| MOD-RCP-GS-001 | Site demarcation for Rainwater Collection Ponds Zone 1 | 2026-02-16 → 2025-07-22 A (-209d) | 2026-03-30 → 2025-07-31 A (-242d) | 0% → 100% | 80.8d → none |
| MOD-RCP-GS-002 | Clearing and grubbing for Rainwater Collection Ponds Zone 1 | 2026-03-30 → 2025-07-22 A (-251d) | 2026-04-23 → 2025-07-31 A (-266d) | 0% → 100% | 80.8d → none |
| MOD-RCP-GS-0031 | Earthwork excavation (other than topsoil or rock) - Zone 1 (3 Ponds) - P1 | 2026-05-10 → 2025-07-29 A (-285d) | 2026-06-08 → 2025-11-13 A (-207d) | 0% → 100% | 66.8d → none |
| MOD-RCP-GS-0041 | Transport and disposal to approved locations - Zone 1 (3 Ponds) - P1 | 2026-06-08 → 2025-09-01 A (-280d) | 2026-07-02 → 2025-11-19 A (-225d) | 0% → 100% | 232.8d → none |
| MOD-RCP-GS-0032 | Earthwork excavation (other than topsoil or rock) - Zone 1 (2 Ponds) - P2 | 2026-06-08 → 2025-11-13 A (-207d) | 2026-07-02 → 2025-12-10 A (-204d) | 0% → 100% | 66.8d → none |
| MOD-RCP-GS-0042 | Transport and disposal to approved locations - Zone 1 (2 Ponds) - P2 | 2026-07-02 → 2025-11-16 A (-228d) | 2026-07-27 → 2025-12-09 A (-230d) | 0% → 100% | 211.8d → none |
| MOD-RCP-GS-0043 | Transport and disposal to approved locations - Zone 1 (2 Ponds) - P3 | 2026-07-27 → 2025-12-08 A (-231d) | 2026-08-20 → 2027-01-16 (+149d) | 0% → 75% | 190.8d → 65.4d |
| MOD-RCP-GS-0033 | Earthwork excavation (other than topsoil or rock) - Zone 1 (2 Ponds) - P3 | 2026-07-02 → 2025-12-10 A (-204d) | 2026-07-27 → 2027-01-09 (+166d) | 0% → 75% | 66.8d → 32.35d |
| 2 | **Backfilling Works** | 2026-07-27 → 2025-09-03 (-327d) | 2026-10-12 → 2027-01-28 (+108d) |  |  |
| MOD-RCP-BW-001 | Select material from excavation or import approved material for Rainwater Collection Ponds Zone 1 | 2026-07-27 → 2025-09-03 A (-327d) | 2026-08-13 → 2027-01-11 (+151d) | 0% → 90% | 66.8d → 32.35d |
| MOD-RCP-BW-002 | Place in layers not exceeding 300mm for Rainwater Collection Ponds Zone 1 | 2026-08-13 → 2025-09-03 A (-344d) | 2026-09-07 → 2027-01-16 (+131d) | 0% → 80% | 167.8d → 75.35d |
| MOD-RCP-BW-003 | Compact each layer to required density for Rainwater Collection Ponds Zone 1 | 2026-09-07 → 2025-11-16 A (-295d) | 2026-10-01 → 2027-01-20 (+111d) | 0% → 80% | 167.8d → 75.35d |
| MOD-RCP-BW-004 | Conduct field density tests for Rainwater Collection Ponds Zone 1 | 2026-10-01 → 2026-08-01 A (-61d) | 2026-10-06 → 2027-01-23 (+109d) | 0% → 60% | 167.8d → 75.35d |
| MOD-RCP-BW-005 | Final leveling and approval for Rainwater Collection Ponds Zone 1 | 2026-10-06 → 2027-01-23 (+109d) | 2026-10-12 → 2027-01-28 (+108d) |  | 167.8d → 75.35d |
| 12 | **Geotextile & Bedding** | 2026-08-13 → 2026-01-07 (-218d) | 2026-10-31 → 2027-03-09 (+129d) |  |  |
| 13 | **Installation of geotextile lining and coarse sand bedding** | 2026-08-13 → 2026-01-07 (-218d) | 2026-10-31 → 2027-03-09 (+129d) |  |  |
| MOD-RCP-GB-002 | Trim subgrade to required level for Rainwater Collection Ponds Zone 1 | 2026-08-13 → 2026-01-07 A (-218d) | 2026-08-22 → 2027-01-14 (+145d) | 0% → 60% | 66.8d → 32.35d |
| MOD-RCP-GB-003 | Lay HDPE geotextile membrane over compacted soil for Rainwater Collection Ponds Zone 1 | 2026-08-22 → 2026-01-15 A (-219d) | 2026-09-15 → 2027-01-25 (+132d) | 0% → 57% | 66.8d → 32.35d |
| MOD-RCP-GB-004 | Place 500mm thick coarse sand bedding for Rainwater Collection Ponds Zone 1 | 2026-09-15 → 2026-01-22 A (-236d) | 2026-10-11 → 2027-02-04 (+116d) | 0% → 57% | 151.8d → 52.29d |
| MOD-RCP-GB-005 | Compact and level bedding for Rainwater Collection Ponds Zone 1 | 2026-10-11 → 2027-02-04 (+116d) | 2026-10-31 → 2027-03-09 (+129d) |  | 151.8d → 52.29d |
| 3 | **Concrete Structures** | 2026-08-22 → 2026-03-01 (-174d) | 2026-10-14 → 2026-04-25 (-172d) |  |  |
| 4 | **Construction of pond slab, walls, vertical structures** | 2026-08-22 → 2026-03-01 (-174d) | 2026-10-14 → 2026-04-25 (-172d) |  |  |
| MOD-RCP-CS-002 | Clean the subgrade for Rainwater Collection Ponds Zone 1 | 2026-08-22 → 2026-03-01 A (-174d) | 2026-08-24 → 2026-03-04 A (-173d) | 0% → 100% | 66.8d → none |
| MOD-RCP-CS-003 | Lay 100mm thick blinding (C15) for Rainwater Collection Ponds Zone 1 | 2026-08-24 → 2026-03-05 A (-172d) | 2026-08-27 → 2026-03-07 A (-173d) | 0% → 100% | 66.8d → none |
| MOD-RCP-CS-004 | Install formwork and reinforcement for Rainwater Collection Ponds Zone 1 | 2026-08-27 → 2026-03-11 A (-169d) | 2026-09-06 → 2026-03-19 A (-171d) | 0% → 100% | 66.8d → none |
| MOD-RCP-CS-005 | Cast base slab with C20 concrete (300–500mm thick) for Rainwater Collection Ponds Zone 1 | 2026-09-06 → 2026-03-21 A (-169d) | 2026-09-10 → 2026-03-24 A (-170d) | 0% → 100% | 66.8d → none |
| MOD-RCP-CS-006 | Construct sub-walls (150–300mm thick) for Rainwater Collection Ponds Zone 1 | 2026-09-10 → 2026-03-24 A (-170d) | 2026-09-19 → 2026-03-31 A (-172d) | 0% → 100% | 66.8d → none |
| MOD-RCP-CS-007 | Construct vertical structures (0.2–1.22m wide) for Rainwater Collection Ponds Zone 1 | 2026-09-19 → 2026-04-01 A (-171d) | 2026-09-30 → 2026-04-09 A (-174d) | 0% → 100% | 66.8d → none |
| MOD-RCP-CS-008 | Remove formwork after curing for Rainwater Collection Ponds Zone 1 | 2026-09-30 → 2026-04-07 A (-176d) | 2026-10-04 → 2026-04-11 A (-176d) | 0% → 100% | 165.8d → none |
| MOD-RCP-CS-009 | Apply power floating finish for Rainwater Collection Ponds Zone 1 | 2026-10-04 → 2026-04-13 A (-174d) | 2026-10-06 → 2026-04-15 A (-174d) | 0% → 100% | 165.8d → none |
| MOD-RCP-CS-010 | Apply waterproofing, bitumen, screed, perimeter lining for Rainwater Collection Ponds Zone 1 | 2026-10-06 → 2026-04-18 A (-171d) | 2026-10-14 → 2026-04-25 A (-172d) | 0% → 100% | 165.8d → none |
| 5 | **Energy Dissipation & Siphon Structures** | 2026-09-30 → 2025-10-01 (-364d) | 2026-11-18 → 2025-12-30 (-323d) |  |  |
| 6 | **Siphon pipes, energy dissipators, and associated civil works** | 2026-09-30 → 2025-10-01 (-364d) | 2026-11-18 → 2025-12-30 (-323d) |  |  |
| MOD-RCP-ED-002 | Excavate for low-level areas for Rainwater Collection Ponds Zone 1 | 2026-09-30 → 2025-10-01 A (-364d) | 2026-10-04 → 2025-11-30 A (-308d) | 0% → 100% | 66.8d → none |
| MOD-RCP-ED-003 | Lay granular bedding and compact for Rainwater Collection Ponds Zone 1 | 2026-10-04 → 2025-10-01 A (-368d) | 2026-10-17 → 2025-12-01 A (-320d) | 0% → 100% | 66.8d → none |
| MOD-RCP-ED-004 | Install siphon pipe with DI 90° bends for Rainwater Collection Ponds Zone 1 | 2026-10-17 → 2025-10-01 A (-381d) | 2026-10-28 → 2025-12-09 A (-323d) | 0% → 100% | 66.8d → none |
| MOD-RCP-ED-005 | Place coarse gravel tamping for Rainwater Collection Ponds Zone 1 | 2026-10-28 → 2025-10-01 A (-392d) | 2026-11-07 → 2025-12-16 A (-326d) | 0% → 100% | 66.8d → none |
| MOD-RCP-ED-006 | Construct reinforced concrete side walls for Rainwater Collection Ponds Zone 1 | 2026-11-07 → 2025-10-01 A (-402d) | 2026-11-14 → 2025-12-20 A (-329d) | 0% → 100% | 66.8d → none |
| MOD-RCP-ED-007 | Brickwork and finishing for Rainwater Collection Ponds Zone 1 | 2026-11-14 → 2025-10-01 A (-409d) | 2026-11-16 → 2025-12-23 A (-328d) | 0% → 100% | 66.8d → none |
| MOD-RCP-ED-008 | Install energy dissipators (gabion baffles, riprap) for Rainwater Collection Ponds Zone 1 | 2026-11-16 → 2025-10-01 A (-411d) | 2026-11-18 → 2025-12-30 A (-323d) | 0% → 100% | 135.8d → none |
| 4 | **Culvert Structures** | 2026-11-16 → 2026-02-03 (-286d) | 2027-02-08 → 2027-04-06 (+57d) |  |  |
| MOD-RCP-CL-001 | Excavate trench for culvert for Rainwater Collection Ponds Zone 1 | 2026-11-16 → 2026-02-03 A (-286d) | 2026-11-17 → 2026-02-12 A (-278d) | 0% → 100% | 66.8d → none |
| MOD-RCP-CL-002 | Compact subgrade and lay granular bedding for Rainwater Collection Ponds Zone 1 | 2026-11-17 → 2026-02-10 A (-280d) | 2026-11-24 → 2026-02-17 A (-280d) | 0% → 100% | 66.8d → none |
| MOD-RCP-CL-003 | Place precast box culverts (all sizes) for Rainwater Collection Ponds Zone 1 | 2026-11-24 → 2026-02-18 A (-279d) | 2026-11-29 → 2026-02-25 A (-277d) | 0% → 100% | 66.8d → none |

| ID | Task | Start | Finish | Duration | Complete | Total float |
| --- | --- | --- | --- | --- | --- | --- |
| MOD-RCP-CL-004 | Align and joint culverts with sealing material for Rainwater Collection Ponds Zone 1 | 2026-11-29 → 2026-02-23 A (-279d) | 2026-12-02 → 2026-02-28 A (-277d) |  | 0% → 100% | 66.8d → none |
| MOD-RCP-CL-005 | Place backfill around and above culvert for Rainwater Collection Ponds Zone 1 | 2026-12-02 → 2026-04-04 A (-242d) | 2026-12-05 → 2026-04-11 A (-238d) |  | 0% → 100% | 66.8d → none |
| MOD-RCP-CL-006 | Compact in layers and test for Rainwater Collection Ponds Zone 1 | 2026-12-05 → 2026-04-09 A (-240d) | 2026-12-07 → 2026-04-18 A (-233d) |  | 0% → 100% | 94.8d → none |
| MOD-RCP-CL-007 | Final surface leveling and protection for Rainwater Collection Ponds Zone 1 | 2026-12-07 → 2026-04-15 A (-236d) | 2026-12-12 → 2026-04-25 A (-231d) |  | 0% → 100% | 94.8d → none |
| 8 | **Access Roads** | 2026-12-05 → 2027-01-14 (+40d) | 2027-02-08 → 2027-04-06 (+57d) |  |  |  |
| 9 | **Construct 3m & 5m wide roads** | 2026-12-05 → 2027-01-14 (+40d) | 2027-02-08 → 2027-04-06 (+57d) |  |  |  |
| MOD-RCP-AR-002 | Clear and grade road alignment for Rainwater Collection Ponds Zone 1 | 2026-12-05 → 2027-01-14 (+40d) | 2026-12-08 → 2027-01-18 (+41d) |  |  | 66.8d → 32.35d |
| MOD-RCP-AR-003 | Excavate and level subgrade for Rainwater Collection Ponds Zone 1 | 2026-12-08 → 2027-01-18 (+41d) | 2026-12-26 → 2027-02-04 (+40d) |  |  | 66.8d → 32.35d |
| MOD-RCP-AR-004 | Place and compact subbase for Rainwater Collection Ponds Zone 1 | 2026-12-26 → 2027-02-04 (+40d) | 2027-01-14 → 2027-03-09 (+54d) |  |  | 66.8d → 32.35d |
| MOD-RCP-AR-005 | Lay base course for Rainwater Collection Ponds Zone 1 | 2026-12-29 → 2027-02-09 (+42d) | 2027-01-25 → 2027-03-24 (+58d) |  |  | 66.8d → 32.35d |
| MOD-RCP-AR-006 | Apply asphalt (if applicable) or gravel surfacing for Rainwater Collection Ponds Zone 1 | 2027-01-06 → 2027-02-23 (+48d) | 2027-01-31 → 2027-03-30 (+58d) |  |  | 66.8d → 32.35d |
| MOD-RCP-AR-007 | Finish shoulders and install signage if required for Rainwater Collection Ponds Zone 1 | 2027-01-31 → 2027-03-30 (+58d) | 2027-02-08 → 2027-04-06 (+57d) |  |  | 66.8d → 32.35d |
| 3 | **Road Crossing Zone 1** | 2026-06-22 → 2027-04-08 (+290d) | 2027-01-23 → 2027-10-19 (+269d) |  |  |  |
| 14 | **uPVC Road Crossing Pipes** | 2026-06-22 → 2027-04-08 (+290d) | 2026-10-29 → 2027-08-18 (+293d) |  |  |  |
| 15 | **Installation of uPVC pipes of various diameters crossing roadways** | 2026-06-22 → 2027-04-08 (+290d) | 2026-10-29 → 2027-08-18 (+293d) |  |  |  |
| MOD-ROC-PV-100 | Demarcation and traffic diversion (if required) for Road Crossing Zone 1 | 2026-06-22 → 2027-04-08 (+290d) | 2026-06-29 → 2027-04-14 (+289d) |  |  | 152.8d → -79d |
| MOD-ROC-PV-110 | Saw cutting and removal of asphalt (if applicable) for Road Crossing Zone 1 | 2026-06-29 → 2027-04-15 (+290d) | 2026-07-13 → 2027-04-28 (+289d) |  |  | 152.8d → -79d |
| MOD-ROC-PV-120 | Excavation across road width to required depth for Road Crossing Zone 1 | 2026-07-13 → 2027-04-29 (+290d) | 2026-08-06 → 2027-05-27 (+294d) |  |  | 152.8d → -79d |
| MOD-ROC-PV-130 | Preparation of trench base with compacted bedding for Road Crossing Zone 1 | 2026-08-06 → 2027-05-29 (+296d) | 2026-08-24 → 2027-06-14 (+294d) |  |  | 152.8d → -79d |
| MOD-ROC-PV-140 | Laying of uPVC pipe (300mm, 315mm, 400mm, 600mm dia) for Road Crossing Zone 1 | 2026-08-24 → 2027-06-15 (+295d) | 2026-09-17 → 2027-07-08 (+294d) |  |  | 152.8d → -79d |
| MOD-ROC-PV-150 | Placement of supports and protection around the pipe for Road Crossing Zone 1 | 2026-09-17 → 2027-07-10 (+296d) | 2026-09-30 → 2027-07-20 (+293d) |  |  | 152.8d → -79d |
| MOD-ROC-PV-160 | Testing of installed pipeline for Road Crossing Zone 1 | 2026-09-30 → 2027-07-21 (+294d) | 2026-10-07 → 2027-07-27 (+293d) |  |  | 152.8d → -79d |
| MOD-ROC-PV-170 | Backfilling and compaction in layers for Road Crossing Zone 1 | 2026-10-07 → 2027-07-28 (+294d) | 2026-10-22 → 2027-08-11 (+293d) |  |  | 152.8d → -79d |
| MOD-ROC-PV-180 | Reinstatement of road surface for Road Crossing Zone 1 | 2026-10-22 → 2027-08-12 (+294d) | 2026-10-29 → 2027-08-18 (+293d) |  |  | 152.8d → -79d |
| 16 | **GRP Road Crossing Pipes** | 2026-10-13 → 2027-08-03 (+294d) | 2027-01-23 → 2027-10-19 (+269d) |  |  |  |
| 17 | **Installation of GRP pipes (800mm–1000mm dia) for road crossings** | 2026-10-13 → 2027-08-03 (+294d) | 2027-01-23 → 2027-10-19 (+269d) |  |  |  |
| MOD-ROC-GR-100 | Set out location and coordinate with road authority for Road Crossing Zone 1 | 2026-10-13 → 2027-08-03 (+294d) | 2026-10-19 → 2027-08-08 (+293d) |  |  | 79.8d → -131d |
| MOD-ROC-GR-110 | Excavate trench across road at designed depth for Road Crossing Zone 1 | 2026-10-19 → 2027-08-09 (+294d) | 2026-11-02 → 2027-08-17 (+288d) | 12d → 8d |  | 79.8d → -131d |
| MOD-ROC-GR-120 | Lay compacted granular bedding for Road Crossing Zone 1 | 2026-11-02 → 2027-08-18 (+289d) | 2026-11-16 → 2027-08-26 (+283d) | 12d → 8d |  | 79.8d → -131d |
| MOD-ROC-GR-130 | Install GRP pipe (800mm & 1000mm dia) for Road Crossing Zone 1 | 2026-11-16 → 2027-08-28 (+285d) | 2026-12-10 → 2027-09-07 (+271d) | 21d → 10d |  | 79.8d → -131d |
| MOD-ROC-GR-140 | Provide structural supports and closure at both ends for Road Crossing Zone 1 | 2026-12-10 → 2027-09-08 (+272d) | 2026-12-21 → 2027-09-18 (+271d) |  |  | 79.8d → -131d |
| MOD-ROC-GR-150 | Perform leak testing as per specifications for Road Crossing Zone 1 | 2026-12-21 → 2027-09-19 (+272d) | 2026-12-27 → 2027-09-25 (+272d) |  |  | 79.8d → -131d |
| MOD-ROC-GR-160 | Backfill and compact in layers for Road Crossing Zone 1 | 2026-12-27 → 2027-09-26 (+273d) | 2027-01-07 → 2027-10-04 (+270d) | 10d → 8d |  | 79.8d → -131d |
| MOD-ROC-GR-170 | Reinstate road surface (asphalt/concrete) for Road Crossing Zone 1 | 2027-01-07 → 2027-10-05 (+271d) | 2027-01-17 → 2027-10-13 (+269d) |  |  | 79.8d → -131d |
| MOD-ROC-GR-180 | Final inspection and approval by relevant authority for Road Crossing Zone 1 | 2027-01-17 → 2027-10-14 (+270d) | 2027-01-23 → 2027-10-19 (+269d) |  |  | 79.8d → -131d |
| 1 | **General** |  | 2027-05-18 → 2027-09-29 (+134d) |  |  |  |
| 5 | **General Items** |  | 2025-06-17 → 2025-08-07 (+51d) |  |  |  |
| 1 | **Site Setup & Facilities** |  | 2025-06-17 → 2025-06-18 (+1d) |  |  |  |
| MOD-GEI-SF-001 | Equip, install, and set up site offices | 2025-05-19 A | 2025-06-17 → 2025-06-18 A (+1d) |  | 0% → 100% | 180.12d → none |
| 2 | **Project Laboratory** | 2025-05-19 → 2025-06-18 (+30d) | 2025-06-17 → 2025-08-07 (+51d) |  |  |  |
| MOD-GEI-PL-001 | Equip, install, and set up project laboratory | 2025-05-19 → 2025-06-18 A (+30d) | 2025-06-17 → 2025-08-07 A (+51d) |  | 0% → 100% | 180.12d → none |
| 3 | **Local Roads** | 2026-08-29 → 2027-04-10 (+224d) | 2027-03-16 → 2027-07-08 (+114d) |  |  |  |
| 1 | **Bituminous Construction** | 2026-08-29 → 2027-04-10 (+224d) | 2026-12-27 → 2027-05-04 (+128d) |  |  |  |
| 1 | **Bituminous Foundation Layer (MC 1)** | 2026-08-29 → 2027-04-10 (+224d) | 2026-12-12 → 2027-04-19 (+128d) |  |  |  |
| MOD-LOR-BC-002 | Prepare subgrade for Local Roads | 2026-08-29 → 2027-04-10 (+224d) | 2026-09-02 → 2027-04-14 (+224d) |  |  | 111.4d → -64.91d |
| MOD-LOR-BC-003 | Apply MC 1 bituminous layer for Local Roads | 2026-12-07 → 2027-04-14 (+128d) | 2026-12-12 → 2027-04-19 (+128d) |  |  | 29.8d → -64.91d |
| 2 | **Bituminous Base Layer (Grade 1 - Class A, 70mm)** | 2026-12-12 → 2027-04-19 (+128d) | 2026-12-17 → 2027-04-25 (+129d) |  |  |  |
| MOD-LOR-BC-005 | Spread and compact bituminous mix for Local Roads | 2026-12-12 → 2027-04-19 (+128d) | 2026-12-17 → 2027-04-25 (+129d) |  |  | 29.8d → -64.91d |
| 3 | **Bituminous Top Layer (Grade 1 - Class A, 50mm)** | 2026-12-17 → 2027-04-25 (+129d) | 2026-12-27 → 2027-05-04 (+128d) |  |  |  |
| MOD-LOR-BC-007 | Apply adhesive layer (R.C) for Local Roads | 2026-12-17 → 2027-04-25 (+129d) | 2026-12-22 → 2027-04-29 (+128d) |  |  | 29.8d → -64.91d |
| MOD-LOR-BC-008 | Spread and compact bituminous concrete for Local Roads | 2026-12-22 → 2027-04-29 (+128d) | 2026-12-27 → 2027-05-04 (+128d) |  |  | 29.8d → -64.91d |
| 2 | **Precast Curbs (Type K1-D)** | 2026-12-27 → 2027-05-04 (+128d) | 2027-03-16 → 2027-07-08 (+114d) |  |  |  |
| MOD-LOR-PC-001 | Excavation & Subgrade Preparation for Local Roads | 2026-12-27 → 2027-05-04 (+128d) | 2027-01-05 → 2027-05-18 (+133d) |  |  | 29.8d → -64.91d |
| MOD-LOR-PC-002 | Pour concrete base & hunching for Local Roads | 2027-01-05 → 2027-05-18 (+133d) | 2027-01-14 → 2027-05-27 (+133d) |  |  | 29.8d → -64.91d |
| MOD-LOR-PC-003 | Install precast curbs for Local Roads | 2027-01-14 → 2027-05-27 (+133d) | 2027-02-08 → 2027-06-20 (+132d) |  |  | 29.8d → -64.91d |
| MOD-LOR-PC-004 | Backfill & compact for Local Roads | 2027-02-08 → 2027-06-20 (+132d) | 2027-02-24 → 2027-06-29 (+125d) |  |  | 29.8d → -64.91d |
| MOD-LOR-PC-005 | Finishing & Waste Disposal for Local Roads | 2027-02-24 → 2027-06-29 (+125d) | 2027-03-16 → 2027-07-08 (+114d) |  |  | 29.8d → -64.91d |
| 2 | **Arterial Roads** | 2026-05-07 → 2026-06-27 (+51d) | 2026-08-29 → 2027-04-10 (+224d) |  |  |  |
| 1 | **Earthworks** | 2026-05-07 → 2027-01-16 (+254d) | 2026-05-10 → 2027-01-18 (+253d) |  |  |  |
| MOD-ARR-EW-001 | Clear vegetation for Arterial Roads | 2026-05-07 → 2027-01-16 (+254d) | 2026-05-09 → 2027-01-17 (+253d) |  |  | 140.8d → -64.91d |
| MOD-ARR-EW-002 | Site Grading for Arterial Roads | 2026-05-09 → 2027-01-17 (+253d) | 2026-05-10 → 2027-01-18 (+253d) |  |  | 140.8d → -64.91d |
| 2 | **Precast Curbs (Type K1-D)** | 2026-05-10 → 2026-06-27 (+48d) | 2026-08-29 → 2027-04-10 (+224d) |  |  |  |
| MOD-ARR-PC-001 | Excavation & Subgrade Prep for Arterial Roads | 2026-05-10 → 2026-06-27 A (+48d) | 2026-05-19 → 2027-01-25 (+251d) |  | 0% → 22% | 140.8d → -64.91d |
| MOD-ARR-PC-002 | Concrete Base & Hunching for Arterial Roads | 2026-05-19 → 2026-06-29 A (+41d) | 2026-06-02 → 2027-02-02 (+245d) |  | 0% → 20% | 140.8d → -64.91d |
| MOD-ARR-PC-003 | Curb Installation for Arterial Roads | 2026-07-07 → 2026-07-01 A (-6d) | 2026-08-01 → 2027-03-08 (+219d) |  | 0% → 13% | 111.4d → -64.91d |
| MOD-ARR-PC-004 | Backfilling & Compaction for Arterial Roads | 2026-08-01 → 2027-03-08 (+219d) | 2026-08-10 → 2027-03-22 (+224d) |  |  | 111.4d → -64.91d |
| MOD-ARR-PC-005 | Finishing for Arterial Roads | 2026-08-10 → 2027-03-22 (+224d) | 2026-08-19 → 2027-03-31 (+224d) |  |  | 111.4d → -64.91d |
| MOD-ARR-PC-006 | Waste Disposal for Arterial Roads | 2026-08-19 → 2027-03-31 (+224d) | 2026-08-29 → 2027-04-10 (+224d) |  |  | 111.4d → -64.91d |
| 4 | **Communications** | 2026-06-22 → 2025-11-04 (-230d) | 2027-05-18 → 2027-05-06 (-12d) |  |  |  |
| 1 | **Ductworks** | 2026-06-22 → 2025-11-04 (-230d) | 2027-02-14 → 2027-04-18 (+63d) |  |  |  |

| ID | Task | Start | Finish | Duration | Complete | Total float | Predecessors |
| --- | --- | --- | --- | --- | --- | --- | --- |
| 1 | **Concrete-Protected Service Culverts (50mm, 8 Outlets)** | 2026-06-22 → 2025-11-04 (-230d) | 2026-09-16 → 2027-04-05 (+201d) |  |  |  |  |
| MOD-COC-DW-002 | Trench Excavation for Communications | 2026-06-22 → 2025-11-04 A (-230d) | 2026-07-08 → 2027-02-24 (+231d) | 14d → 10d | 0% → 96% | 38.8d → -134.66d |  |
| MOD-COC-DW-003 | Culvert Installation & Concrete Protection for Communications | 2026-07-08 → 2025-11-08 A (-242d) | 2026-07-29 → 2027-02-28 (+214d) |  | 0% → 93% | 38.8d → -134.66d |  |
| MOD-COC-DW-004 | Backfilling & Compaction for Communications | 2026-07-29 → 2025-11-10 A (-261d) | 2026-08-23 → 2027-03-04 (+193d) |  | 0% → 86% | 38.8d → -134.66d |  |
| MOD-COC-DW-005 | Testing & Restoration for Communications | 2026-08-23 → 2027-03-06 (+195d) | 2026-09-16 → 2027-04-05 (+201d) |  |  | 74d → 5.79d |  |
| 2 | **Road Crossing Ducts (Exit 8)** | 2026-09-16 → 2025-12-01 (-289d) | 2027-02-14 → 2027-04-18 (+63d) |  |  |  |  |
| MOD-COC-DW-007 | Horizontal Directional Drilling (HDD) for Communications | 2026-09-16 → 2025-12-01 A (-289d) | 2026-10-12 → 2027-04-07 (+177d) |  | 0% → 90% | 74d → 5.79d |  |
| MOD-COC-DW-008 | Duct Installation & Joint Sealing for Communications | 2027-01-06 → 2025-12-09 A (-393d) | 2027-01-24 → 2027-04-10 (+76d) |  | 0% → 88% | 0d → 5.79d |  |
| MOD-COC-DW-009 | Asphalt/Paving Restoration for Communications | 2027-01-24 → 2026-04-01 A (-298d) | 2027-02-14 → 2027-04-18 (+63d) |  | 0% → 56% | 0d → 5.79d |  |
| 3 | **Manholes (Telecom, 2000x1000x1001mm)** | 2027-02-14 → 2025-11-23 (-448d) | 2027-05-18 → 2027-05-06 (-12d) |  |  |  |  |
| MOD-COC-MH-001 | Excavation & Dewatering for Communications | 2027-02-14 → 2025-11-23 A (-448d) | 2027-03-20 → 2026-03-14 A (-371d) |  | 0% → 100% | 0d → none |  |
| MOD-COC-MH-002 | Concrete Works - Foundation - Wall - Roof for Communications | 2027-03-20 → 2025-12-16 A (-459d) | 2027-03-31 → 2027-04-18 (+18d) |  | 0% → 99% | 0d → 5.79d |  |
| MOD-COC-MH-003 | Frame/Cover Installation for Communications | 2027-03-31 → 2025-12-17 A (-469d) | 2027-04-25 → 2027-04-18 (-7d) |  | 0% → 99% | 0d → 5.79d |  |
| MOD-COC-MH-004 | Testing & Handover for Communications | 2027-04-25 → 2027-04-18 (-7d) | 2027-05-18 → 2027-05-06 (-12d) |  |  | 0d → 5.79d |  |
| 11 | **Landscape** | 2026-07-29 → 2027-02-28 (+214d) | 2027-02-21 → 2027-09-29 (+220d) |  |  |  |  |
| 1 | **Supply & Planting of Trees and Shrubs** | 2026-08-18 → 2027-03-28 (+222d) | 2026-12-13 → 2027-07-26 (+225d) |  |  |  |  |
| 15 | **planting of trees, shrubs, and vines** | 2026-08-18 → 2027-03-28 (+222d) | 2026-12-13 → 2027-07-26 (+225d) |  |  |  |  |
| MOD-LNS-PT-002 | Site demarcation and marking of plant locations for Landscape | 2026-08-18 → 2027-03-28 (+222d) | 2026-08-27 → 2027-04-06 (+222d) |  |  | 38.8d → -134.66d |  |
| MOD-LNS-PT-003 | Excavation of planting pits as per specification for Landscape | 2026-08-27 → 2027-04-06 (+222d) | 2026-09-15 → 2027-04-25 (+222d) |  |  | 38.8d → -134.66d |  |
| MOD-LNS-PT-004 | Placement of sweet soil/potting soil as required for Landscape | 2026-09-15 → 2027-04-25 (+222d) | 2026-10-11 → 2027-05-24 (+225d) |  |  | 38.8d → -134.66d |  |
| MOD-LNS-PT-005 | Placement of gravel bed for drainage (if applicable) for Landscape | 2026-10-11 → 2027-05-24 (+225d) | 2026-10-29 → 2027-06-12 (+226d) |  |  | 38.8d → -134.66d |  |
| MOD-LNS-PT-006 | Planting of Palm tree, shrubs and trees for Landscape | 2026-10-29 → 2027-06-12 (+226d) | 2026-11-05 → 2027-06-19 (+226d) |  |  | 38.8d → -134.66d |  |
| MOD-LNS-PT-007 | Backfilling and compacting around the plant base for Landscape | 2026-11-05 → 2027-06-19 (+226d) | 2026-11-10 → 2027-06-23 (+225d) |  |  | 93.8d → -79.66d |  |
| MOD-LNS-PT-008 | Installation of semi-permeable membrane (if required) for Landscape | 2026-11-10 → 2027-06-23 (+225d) | 2026-11-29 → 2027-07-12 (+225d) |  |  | 93.8d → -79.66d |  |
| MOD-LNS-PT-009 | Initial watering and mulching for Landscape | 2026-11-29 → 2027-07-12 (+225d) | 2026-12-08 → 2027-07-21 (+225d) |  |  | 93.8d → -79.66d |  |
| MOD-LNS-PT-010 | Labeling/tagging (if specified) for Landscape | 2026-12-08 → 2027-07-21 (+225d) | 2026-12-13 → 2027-07-26 (+225d) |  |  | 93.8d → -79.66d |  |
| 16 | **Gravel Layer and Bed Preparation** | 2026-07-29 → 2027-02-28 (+214d) | 2026-09-10 → 2027-04-20 (+222d) |  |  |  |  |
| 17 | **Installation of gravel layers and soil beds to support planting and drainage.** | 2026-07-29 → 2027-02-28 (+214d) | 2026-09-10 → 2027-04-20 (+222d) |  |  |  |  |
| MOD-LNS-GL-002 | Grading of planting areas for Landscape | 2026-07-29 → 2027-02-28 (+214d) | 2026-08-01 → 2027-03-03 (+214d) |  |  | 38.8d → -134.66d |  |
| MOD-LNS-GL-003 | Excavation to required depth for Landscape | 2026-08-01 → 2027-03-03 (+214d) | 2026-08-06 → 2027-03-16 (+222d) |  |  | 38.8d → -134.66d |  |
| MOD-LNS-GL-004 | Placement of 50mm gravel layer for green areas for Landscape | 2026-08-06 → 2027-03-16 (+222d) | 2026-08-18 → 2027-03-28 (+222d) |  |  | 38.8d → -134.66d |  |
| MOD-LNS-GL-005 | Placement of 150mm gravel bed for drainage network for Landscape | 2026-08-18 → 2027-03-28 (+222d) | 2026-08-25 → 2027-04-04 (+222d) |  |  | 38.8d → -134.66d |  |
| MOD-LNS-GL-006 | Spreading and compacting the gravel for Landscape | 2026-08-25 → 2027-04-04 (+222d) | 2026-09-01 → 2027-04-11 (+222d) |  |  | 172.8d → -0.66d |  |
| MOD-LNS-GL-007 | Overlay of semi-permeable membrane (if applicable) for Landscape | 2026-09-01 → 2027-04-11 (+222d) | 2026-09-06 → 2027-04-15 (+221d) |  |  | 172.8d → -0.66d |  |
| MOD-LNS-GL-008 | Spreading of potting soil/sweet soil as top layer for Landscape | 2026-09-06 → 2027-04-15 (+221d) | 2026-09-10 → 2027-04-20 (+222d) |  |  | 172.8d → -0.66d |  |
| 2 | **Landscape Irrigation System** | 2026-11-05 → 2027-06-19 (+226d) | 2027-02-21 → 2027-09-29 (+220d) |  |  |  |  |
| 17 | **Design, supply, and installation of irrigation lines for arterial road landscape zones.** | 2026-11-05 → 2027-06-19 (+226d) | 2027-02-21 → 2027-09-29 (+220d) |  |  |  |  |
| MOD-LNS-LI-002 | Approval of design and layout by Owner/Engineer for Landscape | 2026-11-05 → 2027-06-19 (+226d) | 2026-11-14 → 2027-06-27 (+225d) |  |  | 38.8d → -134.66d |  |
| MOD-LNS-LI-003 | Excavation for main and lateral lines for Landscape | 2026-11-14 → 2027-06-27 (+225d) | 2026-11-30 → 2027-07-13 (+225d) |  |  | 38.8d → -134.66d |  |
| MOD-LNS-LI-004 | Supply and installation of irrigation piping and fittings for Landscape | 2026-11-30 → 2027-07-13 (+225d) | 2026-12-07 → 2027-07-20 (+225d) |  |  | 38.8d → -134.66d |  |
| MOD-LNS-LI-005 | Valve box installation and controller placement for Landscape | 2026-12-07 → 2027-07-20 (+225d) | 2026-12-23 → 2027-08-05 (+225d) |  |  | 38.8d → -134.66d |  |
| MOD-LNS-LI-006 | Connection to water source and pump system (if applicable) for Landscape | 2026-12-23 → 2027-08-05 (+225d) | 2027-01-16 → 2027-08-29 (+225d) |  |  | 38.8d → -134.66d |  |
| MOD-LNS-LI-007 | Testing of the irrigation network for leaks and performance for Landscape | 2027-01-16 → 2027-08-29 (+225d) | 2027-01-19 → 2027-09-01 (+225d) |  |  | 38.8d → -134.66d |  |
| MOD-LNS-LI-008 | Backfilling and surface reinstatement for Landscape | 2027-01-19 → 2027-09-01 (+225d) | 2027-02-09 → 2027-09-21 (+224d) |  |  | 38.8d → -134.66d |  |
| MOD-LNS-LI-009 | Commissioning and operational approval for Landscape | 2027-02-10 → 2027-09-21 (+223d) | 2027-02-21 → 2027-09-29 (+220d) |  |  | 38.8d → -134.66d |  |
| 9 | **Testing & Commissioning & Closeout** | 2026-01-12 → 2026-01-14 (+2d) | 2027-05-18 → 2027-10-24 (+159d) |  |  |  |  |
| 1 | **Testing & Commissioning** | 2026-01-12 → 2026-01-14 (+2d) | 2027-05-18 → 2027-05-11 (-7d) |  |  |  |  |
| 1 | **Zone 3** | 2026-01-12 → 2026-01-20 (+8d) | 2027-01-19 → 2027-05-11 (+112d) |  |  |  |  |
| A103610 | Testing and Commissioning for Irrigation Network Zone 3 | 2026-01-12 → 2026-01-20 A (+8d) | 2026-02-04 → 2026-12-13 (+312d) |  | 0% → 80% | 318.8d → 72.75d | MOD-IRN-EB-120, MOD-IRN-EB-130, MOD-IRN-EB-140, MOD-IRN-EB-150, MOD-IRN-EB-180, MOD-IRN-EB-190, MOD-IRN-VA-55, MOD-IRN-VA-65, MOD-IRN-VA-75, MOD-IRN-VA-85, MOD-IRN-VA-95, MOD-IRN-VR-107, MOD-IRN-VR-117, MOD-IRN-VR-127, MOD-IRN-VR-137, MOD-IRN-VR-77, MOD-IRN-VR-87, MOD-IRN-VR-97, MOD-IRN-WC-106, MOD-IRN-WC-116, MOD-IRN-WC-66, MOD-IRN-WC-76, MOD-IRN-WC-86, MOD-IRN-WC-96, MOD-IRN-AC-55, MOD-IRN-AC-65, MOD-IRN-AC-75, MOD-IRN-AC-85, MOD-IRN-AC-95, MOD-IRN-FC-106, MOD-IRN-FC-116, MOD-IRN-FC-66, MOD-IRN-FC-76, MOD-IRN-FC-86, MOD-IRN-FC-96 → MOD-IRN-EB-120, MOD-IRN-EB-130, MOD-IRN-EB-140, MOD-IRN-EB-150, MOD-IRN-EB-180, MOD-IRN-EB-190, MOD-IRN-VA-55, MOD-IRN-VA-65, MOD-IRN-VA-75, MOD-IRN-VA-85, MOD-IRN-VA-95, MOD-IRN-VR-107, MOD-IRN-VR-117, MOD-IRN-VR-127, MOD-IRN-VR-137, MOD-IRN-VR-77, MOD-IRN-VR-87, MOD-IRN-VR-97, MOD-IRN-WC-106, MOD-IRN-WC-116, MOD-IRN-WC-66, MOD-IRN-WC-76, MOD-IRN-WC-86, MOD-IRN-WC-96, MOD-IRN-AC-55, MOD-IRN-AC-65, MOD-IRN-AC-75, MOD-IRN-AC-85, MOD-IRN-AC-95, MOD-IRN-FC-106, MOD-IRN-FC-116 FS+20d, MOD-IRN-FC-66, MOD-IRN-FC-76, MOD-IRN-FC-86, MOD-IRN-FC-96 |
| A103590 | Testing and Commissioning for Rain Water Drainage Network Zone 3 | 2026-01-19 → 2026-01-29 A (+10d) | 2026-02-11 → 2026-12-01 (+293d) |  | 0% → 80% | 312.8d → 82.9d |  |
| A103600 | Testing and Commissioning for Potable Water Network Zone 3 | 2026-01-19 → 2026-01-31 A (+12d) | 2026-02-11 → 2026-11-28 (+290d) |  | 0% → 80% | 312.8d → 86.15d |  |
| A102060 | Testing and Commissioning for Sewerage Network Zone 3 | 2026-03-05 A | 2026-04-09 → 2026-12-20 (+255d) |  | 0% → 80% | 301.4d → 67.5d |  |
| A103620 | Testing and Commissioning for Pumping Station Zone 3 | 2026-12-27 → 2027-04-17 (+111d) | 2027-01-19 → 2027-05-11 (+112d) |  |  | 40.6d → -39.35d |  |
| 2 | **Zone 2** |  | 2026-04-09 → 2026-12-15 (+250d) |  |  |  |  |
| A103660 | Testing and Commissioning for Potable Water Network Zone 2 | 2026-01-14 A | 2026-02-07 → 2026-12-02 (+298d) |  | 0% → 70% | 316.8d → 82.05d |  |
| A103670 | Testing and Commissioning for Irrigation Network Zone 2 | 2026-01-19 → 2026-02-10 A (+22d) | 2026-02-11 → 2026-11-15 (+277d) |  | 0% → 70% | 312.8d → 96.65d |  |
| A103640 | Testing and Commissioning for Sewerage Network Zone 2 | 2026-03-05 A | 2026-04-09 → 2026-12-15 (+250d) |  | 0% → 70% | 280.4d → 70.7d |  |
| A103650 | Testing and Commissioning for Rain Water Drainage Network Zone 2 | 2026-01-19 → 2026-04-11 A (+82d) | 2026-02-11 → 2026-11-17 (+279d) |  | 0% → 70% | 312.8d → 95.05d |  |
| 3 | **Zone 1** |  | 2027-01-21 → 2027-03-25 (+63d) |  |  |  |  |
| A103710 | Testing and Commissioning for Potable Water Network Zone 1 | 2026-01-18 A | 2026-02-10 → 2026-12-06 (+299d) |  | 0% → 70% | 313.8d → 79.05d |  |
| A103700 | Testing and Commissioning for Rain Water Drainage Network Zone 1 | 2026-01-19 A | 2026-02-11 → 2026-11-09 (+271d) |  | 0% → 70% | 312.8d → 101.85d |  |
| A103720 | Testing and Commissioning for Irrigation Network Zone 1 | 2026-01-19 A | 2026-02-11 → 2026-11-17 (+279d) |  | 0% → 70% | 312.8d → 95.45d |  |
| A103690 | Testing and Commissioning for Sewerage Network Zone 1 | 2026-02-11 A | 2026-03-25 → 2026-12-26 (+276d) |  | 0% → 70% | 292.8d → 62.3d |  |
| A103730 | Testing and Commissioning for Pumping Station Zone 1 | 2026-12-29 → 2027-03-08 (+69d) | 2027-01-21 → 2027-03-25 (+63d) | 21d → 10d |  | 38.6d → 0.79d |  |
| 4 | **General** | 2027-04-20 → 2026-06-14 (-310d) | 2027-05-18 → 2027-05-08 (-10d) |  |  |  |  |
| A103630 | Testing and Commissioning for Communication | 2027-04-20 → 2026-06-14 A (-310d) | 2027-05-18 → 2027-05-08 (-10d) |  | 0% → 70% | 0d → 5.79d |  |
| 2 | **As-Built** | 2026-12-12 → 2027-01-16 (+35d) | 2027-05-18 → 2027-10-24 (+159d) |  |  |  |  |
| HO-13 | Earthworks as-built Submittals & Approval | 2026-12-12 → 2027-01-16 (+35d) | 2027-01-05 → 2027-02-10 (+36d) |  |  | 94.8d → 65.4d |  |
| HO-0001 | Mechanical as-built Submittals & Approval | 2027-01-23 → 2027-05-11 (+108d) | 2027-02-23 → 2027-06-09 (+106d) |  |  | 38.6d → -39.35d | A102060 SS, A103590, A103600, A103610, A103620, A103640, A103650, A103660, A103670, A103690, A103700, A103710, A103720, A103730 → A102060, A103590, A103600, A103610, A103620, A103640, A103650, A103660, A103670, A103690, A103700, A103710, A103720, A103730 |
| HO-3 | Electrical as-built Submittals & Approval | 2027-04-20 → 2027-05-11 (+21d) | 2027-05-18 → 2027-06-09 (+22d) |  |  | 0d → -18.35d |  |

| ID | Task | Start | Finish | Total float |
| --- | --- | --- | --- | --- |
| HO-23 | Roadworks as-built Submittals & Approval | 2027-03-16 → 2027-07-08 (+114d) | 2027-04-10 → 2027-08-02 (+114d) | 29.8d → -64.91d |
| HO-33 | Landscape as-built Submittals & Approval | 2027-02-23 → 2027-09-29 (+218d) | 2027-03-30 → 2027-10-24 (+208d) | 38.8d → -134.66d |
| 3 | **Handover** | 2027-04-20 → 2027-06-09 (+50d) | 2027-05-18 → 2027-07-04 (+47d) |  |
| HO-0003 | Handover & Demobilization | 2027-04-20 → 2027-06-09 (+50d) | 2027-05-18 → 2027-07-04 (+47d) | 0d → -39.35d |

## Version 3 (data date 2026-10-10, saved 2026-10-13, file 38-MOD-2937-B4-Up- 101326.xer)

Last finish stays 2027-10-24.

Changed:

| ID | Task | Start | Finish | Total float |
| --- | --- | --- | --- | --- |
| MIL-0003 | Submission of Report, Work Plan, and Schedule | 2026-10-03 → 2026-10-10 (+7d) | 2026-10-03 → 2026-10-10 (+7d) | 228d → 221d |
| MIL-0004 | Submission and Approval of Drawings and Specifications | 2026-10-08 → 2026-10-15 (+7d) | 2026-10-08 → 2026-10-15 (+7d) | -161d → -168d |
| 2 | **Mobilization** |  | 2026-12-22 → 2026-12-29 (+7d) |  |
| 8 | **Deliverables** |  | 2026-12-22 → 2026-12-29 (+7d) |  |
| 1 | **Submittals** |  | 2026-12-10 → 2026-12-17 (+7d) |  |
| S10002 | Prepare & Submit Method of Statement |  | 2026-10-06 → 2026-10-13 (+7d) | 68.4d → 62.4d |
| S100015 | Prepare & Submit Pre-commissioning/ Commissioning Plan/ Startup/ Testing / Handover Plan | 2026-10-03 → 2026-10-10 (+7d) | 2026-12-10 → 2026-12-17 (+7d) | 7.4d → 1.4d |
| 2 | **Approvals** |  | 2026-12-22 → 2026-12-29 (+7d) |  |
| S100106 | Approval of Method of Statement |  | 2026-10-12 → 2026-10-19 (+7d) | 68.4d → 62.4d |
| S100086 | Approval of Pre-commissioning/ Commissioning Plan/ Startup/ Testing / Handover Plan | 2026-12-12 → 2026-12-19 (+7d) | 2026-12-22 → 2026-12-29 (+7d) | 7.4d → 1.4d |
| 7 | **Engineering** |  | 2026-10-14 → 2026-10-21 (+7d) |  |
| 3 | **Shop Drawing** |  | 2026-10-08 → 2026-10-15 (+7d) |  |
| 2 | **Approvals** |  | 2026-10-08 → 2026-10-15 (+7d) |  |
| A1630 | Landscape details approval |  | 2026-10-08 → 2026-10-15 (+7d) | -112d → -117d |
| 1 | **Material Submittal & Approval** |  | 2026-10-14 → 2026-10-21 (+7d) |  |
| 20 | **Long Lead Items** |  | 2026-10-07 → 2026-10-14 (+7d) |  |
| 13 | **Generators & Fuel Tanks - PS & Control Bldg backup power** |  | 2026-10-07 → 2026-10-14 (+7d) |  |
| A102930 | Material Submittal for Generators & Fuel Tanks - PS & Control Bldg backup power |  | 2026-10-06 → 2026-10-13 (+7d) | 0.79d → -4.21d |
| A102940 | Material Approval for Generators & Fuel Tanks - PS & Control Bldg backup power |  | 2026-10-07 → 2026-10-14 (+7d) | 0.79d → -4.21d |
| 21 | **Short Lead Items** |  | 2026-10-14 → 2026-10-21 (+7d) |  |
| 15 | **Interlock Tiles / Curbstone - Roads, Sidewalks, Landscape** |  | 2026-10-13 → 2026-10-20 (+7d) |  |
| A103180 | Material Approval for Interlock Tiles / Curbstone - Roads, Sidewalks, Landscape |  | 2026-10-13 → 2026-10-20 (+7d) | 11.73d → 24.73d |
| 16 | **Landscaping Materials (Soil, Plants) - Final works, softscape** |  | 2026-10-14 → 2026-10-21 (+7d) |  |
| A103200 | Material Approval for Landscaping Materials (Soil, Plants) - Final works, softscape |  | 2026-10-14 → 2026-10-21 (+7d) | -95.3d → -100.3d |
| 3 | **Procurement** |  | 2027-02-01 → 2027-02-10 (+9d) |  |
| 1 | **Prequalification** |  | 2026-10-07 → 2026-10-14 (+7d) |  |
| 21 | **Short Lead Items** |  | 2026-10-07 → 2026-10-14 (+7d) |  |
| 15 | **Interlock Tiles / Curbstone - Roads, Sidewalks, Landscape** |  | 2026-10-07 → 2026-10-14 (+7d) |  |
| A103560 | Prequalification Approval for Interlock Tiles / Curbstone - Roads, Sidewalks, Landscape |  | 2026-10-07 → 2026-10-14 (+7d) | 14.73d → 29.73d |
| 16 | **Landscaping Materials (Soil, Plants) - Final works, softscape** |  | 2026-10-07 → 2026-10-14 (+7d) |  |
| A103580 | Prequalification Approval for Landscaping Materials (Soil, Plants) - Final works, softscape |  | 2026-10-07 → 2026-10-14 (+7d) | -112.3d → -118.3d |
| 20 | **Long Lead Items** |  | 2026-11-30 → 2026-12-07 (+7d) |  |
| 2 | **Drainage Channel Covers (GRP / DI) - For storm and wastewater** |  | 2026-10-04 → 2026-10-11 (+7d) |  |
| A102570 | Custom Clearance for Drainage Channel Covers (GRP / DI) - For storm and wastewater |  | 2026-10-03 → 2026-10-10 (+7d) | -68.11d → -74.11d |
| A1230 | Manufacturing for Drainage Channel Covers (GRP / DI) - For storm and wastewater |  | 2026-10-03 → 2026-10-10 (+7d) | -68.11d → -74.11d |
| A1240 | Delivery for Drainage Channel Covers (GRP / DI) - For storm and wastewater |  | 2026-10-03 → 2026-10-10 (+7d) | -68.11d → -74.11d |
| A102580 | Staging Time for Drainage Channel Covers (GRP / DI) - For storm and wastewater |  | 2026-10-04 → 2026-10-11 (+7d) | -68.11d → -74.11d |
| 3 | **Control & Instrumentation Devices - Flow meters, pressure sensors** |  | 2026-10-29 → 2026-11-05 (+7d) |  |
| A1530 | Manufacturing for Control & Instrumentation Devices - Flow meters, pressure sensors |  | 2026-10-04 → 2026-10-11 (+7d) | -39.35d → -45.35d |
| A102610 | Custom Clearance for Control & Instrumentation Devices - Flow meters, pressure sensors |  | 2026-10-04 → 2026-10-11 (+7d) | -39.35d → -45.35d |
| A1570 | Delivery for Control & Instrumentation Devices - Flow meters, pressure sensors |  | 2026-10-06 → 2026-10-13 (+7d) | -39.35d → -45.35d |
| A102620 | Staging Time for Control & Instrumentation Devices - Flow meters, pressure sensors |  | 2026-10-29 → 2026-11-05 (+7d) | -39.35d → -45.35d |
| 10 | **Pumps (Sewage, Irrigation, Booster) - Especially for pumping stations** |  | 2026-10-07 → 2026-10-14 (+7d) |  |
| A102150 | Manufacturing for Pumps (Sewage, Irrigation, Booster) - Especially for pumping stations |  | 2026-10-03 → 2026-10-10 (+7d) | 45.3d → 39.3d |
| A102170 | Delivery for Pumps (Sewage, Irrigation, Booster) - Especially for pumping stations |  | 2026-10-05 → 2026-10-12 (+7d) | 45.3d → 39.3d |
| A102630 | Custom Clearance for Pumps (Sewage, Irrigation, Booster) - Especially for pumping stations |  | 2026-10-04 → 2026-10-11 (+7d) | 45.3d → 39.3d |
| A102640 | Staging Time for Pumps (Sewage, Irrigation, Booster) - Especially for pumping stations |  | 2026-10-07 → 2026-10-14 (+7d) | 45.3d → 39.3d |
| 13 | **Generators & Fuel Tanks - PS & Control Bldg backup power** |  | 2026-10-26 → 2026-11-02 (+7d) |  |
| A102230 | Manufacturing for Generators & Fuel Tanks - PS & Control Bldg backup power |  | 2026-10-11 → 2026-10-18 (+7d) | 0.79d → -5.21d |
| A102250 | Delivery for Generators & Fuel Tanks - PS & Control Bldg backup power |  | 2026-10-12 → 2026-10-19 (+7d) | 0.79d → -5.21d |
| A102670 | Custom Clearance for Generators & Fuel Tanks - PS & Control Bldg backup power |  | 2026-10-11 → 2026-10-18 (+7d) | 0.79d → -5.21d |
| A102680 | Staging Time for Generators & Fuel Tanks - PS & Control Bldg backup power |  | 2026-10-26 → 2026-11-02 (+7d) | 0.79d → -5.21d |
| 11 | **Odor Control Units - Sewer PS-specific** |  | 2026-11-30 → 2026-12-07 (+7d) |  |
| A102720 | Staging Time for Odor Control Units - Sewer PS-specific | 2026-10-26 → 2026-11-02 (+7d) | 2026-11-30 → 2026-12-07 (+7d) | 0.79d → -5.21d |
| 21 | **Short Lead Items** |  | 2027-02-01 → 2027-02-10 (+9d) |  |
| 1 | **Asphalt** |  | 2026-12-01 → 2026-12-08 (+7d) |  |
| A102730 | Delivery for Asphalt Phase 1 |  | 2026-12-01 → 2026-12-08 (+7d) | 35.58d → 51.58d |
| A103740 | Delivery for Asphalt Phase 2 |  | 2026-12-01 → 2026-12-08 (+7d) | 35.58d → 51.58d |
| A103750 | Delivery for Asphalt Phase 3 |  | 2026-12-01 → 2026-12-08 (+7d) | 101.66d → 95.66d |
| 15 | **Interlock Tiles / Curbstone - Roads, Sidewalks, Landscape** |  | 2026-11-02 → 2026-11-09 (+7d) |  |
| A102380 | Manufacturing for Interlock Tiles / Curbstone - Roads, Sidewalks, Landscape |  | 2026-10-13 → 2026-10-20 (+7d) | 13.73d → 29.73d |
| A102400 | Delivery for Interlock Tiles / Curbstone - Roads, Sidewalks, Landscape |  | 2026-10-14 → 2026-10-21 (+7d) | 13.73d → 29.73d |
| A102820 | Staging Time for Interlock Tiles / Curbstone - Roads, Sidewalks, Landscape |  | 2026-11-02 → 2026-11-09 (+7d) | 13.73d → 29.73d |
| 16 | **Landscaping Materials (Soil, Plants) - Final works, softscape** | 2026-10-14 → 2026-10-21 (+7d) | 2027-02-01 → 2027-02-10 (+9d) |  |
| A102350 | Issue PO for Landscaping Materials (Soil, Plants) - Final works, softscape | 2026-10-14 → 2026-10-21 (+7d) | 2026-10-19 → 2026-10-26 (+7d) | -113.3d → -119.3d |
| A102360 | Manufacturing for Landscaping Materials (Soil, Plants) - Final works, softscape | 2026-10-19 → 2026-10-26 (+7d) | 2026-12-28 → 2027-01-04 (+7d) | -113.3d → -119.3d |
| A102390 | Delivery for Landscaping Materials (Soil, Plants) - Final works, softscape | 2026-12-28 → 2027-01-04 (+7d) | 2027-02-01 → 2027-02-10 (+9d) | -113.3d → -119.3d |
| 2 | **Sewerage Network Zone 3** |  | 2027-04-17 → 2027-04-24 (+7d) |  |
| 3 | **Pipework: Supply, Installation, and Testing** |  | 2026-10-26 → 2026-11-02 (+7d) |  |
| 3 | **HDPE Pressure Pipes Installation (250mm–630mm)** |  | 2026-10-26 → 2026-11-02 (+7d) |  |

| ID | Task | Start | Finish | Total float |
| --- | --- | --- | --- | --- |
| MOD-SWN-PW-425 | Test (Pressure - Slope) HDPE for Sewerage Network Zone 3 |  | 2026-10-05 → 2026-10-12 (+7d) | 145.8d → 138.8d |
| MOD-SWN-PW-435 | Coating / Wrapping HDPE for Sewerage Network Zone 3 |  | 2026-10-11 → 2026-10-18 (+7d) | 145.8d → 138.8d |
| MOD-SWN-PW-395 | Backfilling & Warrning Tape HDPE for Sewerage Network Zone 3 | 2026-10-12 → 2026-10-19 (+7d) | 2026-10-26 → 2026-11-02 (+7d) | 145.8d → 138.8d |
| 4 | **Fittings and Valves** | 2026-10-03 → 2026-10-10 (+7d) | 2026-11-02 → 2026-11-09 (+7d) |  |
| MOD-SWN-FV-55 | Supply & Installation of HDPE Elbows for Sewerage Network Zone 3 | 2026-10-03 → 2026-10-10 (+7d) | 2026-10-08 → 2026-10-15 (+7d) | 103.4d → 97.4d |
| MOD-SWN-FV-65 | Gate Valves Installation for Sewerage Network Zone 3 | 2026-10-10 → 2026-10-17 (+7d) | 2026-10-13 → 2026-10-20 (+7d) | 103.4d → 97.4d |
| MOD-SWN-FV-75 | Drain Valves Installation for Sewerage Network Zone 3 | 2026-10-14 → 2026-10-21 (+7d) | 2026-10-18 → 2026-10-25 (+7d) | 103.4d → 97.4d |
| MOD-SWN-FV-85 | Air Breather & Air Release Valves Installation for Sewerage Network Zone 3 | 2026-10-19 → 2026-10-26 (+7d) | 2026-10-29 → 2026-11-05 (+7d) | 103.4d → 97.4d |
| MOD-SWN-FV-95 | Jointing & Piping Accessories Installation for Sewerage Network Zone 3 | 2026-10-31 → 2026-11-07 (+7d) | 2026-11-02 → 2026-11-09 (+7d) | 103.4d → 97.4d |
| 6 | **Valve & Flow Meter Chambers** |  | 2026-12-14 → 2026-12-21 (+7d) |  |
| 1 | **Valve Chambers Construction** |  | 2026-11-16 → 2026-11-23 (+7d) |  |
| MOD-SWN-PW-815 | Excavation Valve Chamber for Sewerage Network Zone 3 |  | 2026-10-11 → 2026-10-18 (+7d) | 96.9d → 89.9d |
| MOD-SWN-PW-825 | Lean Concrete / Bedding Valve Chamber for Sewerage Network Zone 3 |  | 2026-10-21 → 2026-10-28 (+7d) | 96.9d → 89.9d |
| MOD-SWN-VF-84 | Valve Chambers Construction Valve Chamber for Sewerage Network Zone 3 |  | 2026-10-24 → 2026-10-31 (+7d) | 96.9d → 89.9d |
| MOD-SWN-PW-835 | Test Valve Chamber for Sewerage Network Zone 3 |  | 2026-11-01 → 2026-11-08 (+7d) | 125.4d → 118.4d |
| MOD-SWN-PW-805 | Backfilling Valve Chamber for Sewerage Network Zone 3 | 2026-11-01 → 2026-11-08 (+7d) | 2026-11-16 → 2026-11-23 (+7d) | 125.4d → 118.4d |
| 2 | **Water Drain Chambers Construction** |  | 2026-12-03 → 2026-12-10 (+7d) |  |
| MOD-SWN-PW-855 | Excavation Water Drain Chamber for Sewerage Network Zone 3 |  | 2026-10-09 → 2026-10-16 (+7d) | 104.1d → 97.1d |
| MOD-SWN-PW-865 | Lean Concrete / Bedding Water Drain Chamber for Sewerage Network Zone 3 |  | 2026-10-17 → 2026-10-24 (+7d) | 104.1d → 97.1d |
| MOD-SWN-VF-94 | Water Drain Chambers Construction Water Drain Chamber for Sewerage Network Zone 3 |  | 2026-11-03 → 2026-11-10 (+7d) | 96.9d → 89.9d |
| MOD-SWN-PW-875 | Test Water Drain Chamber for Sewerage Network Zone 3 | 2026-11-03 → 2026-11-10 (+7d) | 2026-11-18 → 2026-11-25 (+7d) | 108.4d → 101.4d |
| MOD-SWN-PW-845 | Backfilling Water Drain Chamber for Sewerage Network Zone 3 | 2026-11-18 → 2026-11-25 (+7d) | 2026-12-03 → 2026-12-10 (+7d) | 108.4d → 101.4d |
| 3 | **Discharge Chambers Construction** |  | 2026-12-09 → 2026-12-16 (+7d) |  |
| MOD-SWN-PW-895 | Excavation Discharge Chamber for Sewerage Network Zone 3 |  | 2026-10-11 → 2026-10-18 (+7d) | 109.4d → 102.4d |
| MOD-SWN-PW-905 | Lean Concrete / Bedding Discharge Chamber for Sewerage Network Zone 3 |  | 2026-10-21 → 2026-10-28 (+7d) | 109.4d → 102.4d |
| MOD-SWN-VF-104 | Discharge Chambers Construction Discharge Chamber for Sewerage Network Zone 3 |  | 2026-11-09 → 2026-11-16 (+7d) | 96.9d → 89.9d |
| MOD-SWN-PW-915 | Test Discharge Chamber for Sewerage Network Zone 3 | 2026-11-09 → 2026-11-16 (+7d) | 2026-11-24 → 2026-12-01 (+7d) | 101.9d → 94.9d |
| MOD-SWN-PW-885 | Backfilling Discharge Chamber for Sewerage Network Zone 3 | 2026-11-24 → 2026-12-01 (+7d) | 2026-12-09 → 2026-12-16 (+7d) | 101.9d → 94.9d |
| 4 | **Flow Meter Chambers Construction** |  | 2026-12-14 → 2026-12-21 (+7d) |  |
| MOD-SWN-PW-935 | Excavation Flow Meter Chamber for Sewerage Network Zone 3 |  | 2026-10-11 → 2026-10-18 (+7d) | 113.8d → 106.8d |
| MOD-SWN-PW-945 | Lean Concrete / Bedding Flow Meter Chamber for Sewerage Network Zone 3 |  | 2026-10-23 → 2026-10-30 (+7d) | 113.8d → 106.8d |
| MOD-SWN-VF-114 | Flow Meter Chambers Construction Flow Meter Chamber for Sewerage Network Zone 3 | 2026-11-09 → 2026-11-16 (+7d) | 2026-11-14 → 2026-11-21 (+7d) | 96.9d → 89.9d |
| MOD-SWN-PW-955 | Test Flow Meter Chamber for Sewerage Network Zone 3 | 2026-11-14 → 2026-11-21 (+7d) | 2026-11-29 → 2026-12-06 (+7d) | 96.9d → 89.9d |
| MOD-SWN-PW-925 | Backfilling Flow Meter Chamber for Sewerage Network Zone 3 | 2026-11-29 → 2026-12-06 (+7d) | 2026-12-14 → 2026-12-21 (+7d) | 96.9d → 89.9d |
| 7 | **Manholes** |  | 2026-12-03 → 2026-12-04 (+1d) |  |
| 2 | **1500mm GRP Manholes (Standard & Backdrop)** |  | 2026-11-20 → 2026-11-23 (+3d) |  |
| MOD-SWN-PW-1655 | Excavation 1.5m GRP for Sewerage Network Zone 3 |  | 2026-10-05 → 2026-10-12 (+7d) | 108.1d → 107d |
| MOD-SWN-PW-1665 | Lean Concrete / Bedding 1.5m GRP for Sewerage Network Zone 3 |  | 2026-10-13 → 2026-10-18 (+5d) | 108.1d → 107d |
| MOD-SWN-MH-195 | 1500mm GRP Manholes (Standard & Backdrop) 1.5m GRP for Sewerage Network Zone 3 |  | 2026-10-21 → 2026-10-24 (+3d) | 108.1d → 107d |
| MOD-SWN-PW-1675 | Test 1.5m GRP for Sewerage Network Zone 3 | 2026-10-21 → 2026-10-24 (+3d) | 2026-11-05 → 2026-11-08 (+3d) | 120.9d → 118.1d |
| MOD-SWN-PW-1645 | Backfilling 1.5m GRP for Sewerage Network Zone 3 | 2026-11-05 → 2026-11-08 (+3d) | 2026-11-20 → 2026-11-23 (+3d) | 120.9d → 118.1d |
| 3 | **1800mm GRP Manholes (Standard & Backdrop)** |  | 2026-11-27 → 2026-11-28 (+1d) |  |
| MOD-SWN-PW-1695 | Excavation 1.8m GRP for Sewerage Network Zone 3 |  | 2026-10-05 → 2026-10-12 (+7d) | 116.5d → 113.3d |
| MOD-SWN-PW-1705 | Lean Concrete / Bedding 1.8m GRP for Sewerage Network Zone 3 |  | 2026-10-13 → 2026-10-18 (+5d) | 116.5d → 113.3d |
| MOD-SWN-MH-205 | 1800mm GRP Manholes (Standard & Backdrop) 1.8m GRP for Sewerage Network Zone 3 |  | 2026-10-28 → 2026-10-29 (+1d) | 108.1d → 107d |
| MOD-SWN-PW-1715 | Test 1.8m GRP for Sewerage Network Zone 3 | 2026-10-28 → 2026-10-29 (+1d) | 2026-11-12 → 2026-11-13 (+1d) | 114.1d → 113d |
| MOD-SWN-PW-1685 | Backfilling 1.8m GRP for Sewerage Network Zone 3 | 2026-11-12 → 2026-11-13 (+1d) | 2026-11-27 → 2026-11-28 (+1d) | 114.1d → 113d |
| 4 | **2000mm GRP Manholes (Standard & Backdrop)** |  | 2026-12-03 → 2026-12-04 (+1d) |  |
| MOD-SWN-PW-1735 | Excavation 2m GRP for Sewerage Network Zone 3 |  | 2026-10-05 → 2026-10-12 (+7d) | 123.3d → 118.4d |
| MOD-SWN-PW-1745 | Lean Concrete / Bedding 2m GRP for Sewerage Network Zone 3 |  | 2026-10-13 → 2026-10-18 (+5d) | 123.3d → 118.4d |
| MOD-SWN-MH-215 | 2000mm GRP Manholes (Standard & Backdrop) 2m GRP for Sewerage Network Zone 3 | 2026-10-28 → 2026-10-29 (+1d) | 2026-11-03 → 2026-11-04 (+1d) | 108.1d → 107d |
| MOD-SWN-PW-1755 | Test 2m GRP for Sewerage Network Zone 3 | 2026-11-03 → 2026-11-04 (+1d) | 2026-11-18 → 2026-11-19 (+1d) | 108.1d → 107d |
| MOD-SWN-PW-1725 | Backfilling 2m GRP for Sewerage Network Zone 3 | 2026-11-18 → 2026-11-19 (+1d) | 2026-12-03 → 2026-12-04 (+1d) | 108.1d → 107d |
| 5 | **Pumping Stations** |  | 2027-04-17 → 2027-04-24 (+7d) |  |
| 1 | **Sewage Pumps and MCC System** | 2026-10-26 → 2026-11-02 (+7d) | 2026-12-14 → 2026-12-21 (+7d) |  |
| MOD-SWN-PS-644 | Sewage pumps (2x30 l/s, 1x115 l/s) incl. MCC – PS3 for Sewerage Network Zone 3 | 2026-10-26 → 2026-11-02 (+7d) | 2026-11-19 → 2026-11-26 (+7d) | 50.79d → 44.79d |
| MOD-SWN-PS-654 | Sewage pumps (2x100 l/s) incl. MCC – PS4 for Sewerage Network Zone 3 | 2026-11-19 → 2026-11-26 (+7d) | 2026-12-14 → 2026-12-21 (+7d) | 50.79d → 44.79d |
| 3 | **In-Line Booster Stations** | 2026-10-03 → 2026-10-10 (+7d) | 2026-12-14 → 2026-12-21 (+7d) |  |
| MOD-SWN-PS-674 | In-Line Booster Stations - Civil Works for Sewerage Network Zone 3 | 2026-10-03 → 2026-10-10 (+7d) | 2026-10-26 → 2026-11-02 (+7d) | 50.6d → 44.6d |
| MOD-SWN-PS-1144 | In-Line Booster Stations - Mechanical Works for Sewerage Network Zone 3 | 2026-10-27 → 2026-11-03 (+7d) | 2026-11-19 → 2026-11-26 (+7d) | 50.6d → 44.6d |
| MOD-SWN-PS-1154 | In-Line Booster Stations - Electrical Works for Sewerage Network Zone 3 | 2026-11-21 → 2026-11-28 (+7d) | 2026-12-14 → 2026-12-21 (+7d) | 50.6d → 44.6d |
| 7 | **Engine/Motor Control Center Buildings** | 2026-10-03 → 2026-10-10 (+7d) | 2026-10-11 → 2026-10-18 (+7d) |  |
| MOD-SWN-PS-934 | MCC Building – PS3 for Sewerage Network Zone 3 | 2026-10-03 → 2026-10-10 (+7d) | 2026-10-03 → 2026-10-10 (+7d) | -17.1d → -23.1d |
| MOD-SWN-PS-944 | MCC Building – PS4 for Sewerage Network Zone 3 | 2026-10-04 → 2026-10-11 (+7d) | 2026-10-11 → 2026-10-18 (+7d) | 15.3d → 9.3d |
| 4 | **Valves and Fittings (General Supply & Installation)** |  | 2026-11-05 → 2026-11-12 (+7d) |  |
| MOD-SWN-PS-714 | Valves, fittings, flow meters – PS3 for Sewerage Network Zone 3 |  | 2026-10-31 → 2026-11-07 (+7d) | -39.35d → -45.35d |
| MOD-SWN-PS-724 | Valves, fittings, flow meters – PS4 for Sewerage Network Zone 3 |  | 2026-11-03 → 2026-11-10 (+7d) | -39.35d → -45.35d |
| MOD-SWN-PS-734 | 35mm SS 316 mesh network – PS4 for Sewerage Network Zone 3 |  | 2026-11-05 → 2026-11-12 (+7d) | -39.35d → -45.35d |
| 5 | **Tank with Canopy** | 2026-11-05 → 2026-11-12 (+7d) | 2026-11-19 → 2026-11-26 (+7d) |  |
| MOD-SWN-PS-754 | Tank with canopy (per specs/drawings) - PS4 for Sewerage Network Zone 3 | 2026-11-05 → 2026-11-12 (+7d) | 2026-11-19 → 2026-11-26 (+7d) | -39.35d → -45.35d |

| ID | Task | Start | Finish | Total float |
| --- | --- | --- | --- | --- |
| 6 | **Pump Well and Valve Chambers** | 2026-11-19 → 2026-11-26 (+7d) | 2027-02-27 → 2027-03-15 (+16d) |  |
| MOD-SWN-PS-844 | Pump well & valve chamber structure – PS3 (2 wells, 5x5m, 11m depth) for Sewerage Network Zone 3 | 2026-11-19 → 2026-11-26 (+7d) | 2026-12-14 → 2026-12-21 (+7d) | -39.35d → -45.35d |
| MOD-SWN-PS-854 | Concrete wall (5x5x1m) inside PS3 well for Sewerage Network Zone 3 | 2026-12-14 → 2026-12-21 (+7d) | 2026-12-19 → 2026-12-26 (+7d) | 17.95d → 11.95d |
| MOD-SWN-PS-884 | Pump well & valve chamber structure – PS4 (1 well, 4m, 11m depth) for Sewerage Network Zone 3 | 2026-12-14 → 2026-12-21 (+7d) | 2027-01-09 → 2027-01-16 (+7d) | -39.35d → -45.35d |
| MOD-SWN-PS-864 | Valve chamber – PS3 for Sewerage Network Zone 3 | 2026-12-19 → 2026-12-26 (+7d) | 2027-01-11 → 2027-01-18 (+7d) | 17.95d → 11.95d |
| MOD-SWN-PS-894 | Valve chamber – PS4 for Sewerage Network Zone 3 | 2027-01-09 → 2027-01-16 (+7d) | 2027-02-02 → 2027-02-11 (+9d) | -39.35d → -45.35d |
| MOD-SWN-PS-874 | Flow meter chamber – PS3 for Sewerage Network Zone 3 | 2027-01-11 → 2027-01-18 (+7d) | 2027-01-21 → 2027-01-28 (+7d) | 17.95d → 11.95d |
| MOD-SWN-PS-904 | Flow meter chamber – PS4 for Sewerage Network Zone 3 | 2027-02-02 → 2027-02-11 (+9d) | 2027-02-27 → 2027-03-15 (+16d) | -39.35d → -45.35d |
| 8 | **Odor Control System Base/Plinth** | 2027-04-08 → 2027-04-15 (+7d) | 2027-04-15 → 2027-04-22 (+7d) |  |
| MOD-SWN-PS-954 | Concrete plinth below odor control – PS3 & PS4 for Sewerage Network Zone 3 | 2027-04-08 → 2027-04-15 (+7d) | 2027-04-15 → 2027-04-22 (+7d) | -39.35d → -45.35d |
| 10 | **Lighting Works** |  | 2027-04-17 → 2027-04-24 (+7d) |  |
| MOD-SWN-PS-1024 | 250W Flood Light installation – PS3 & PS4 for Sewerage Network Zone 3 |  | 2027-04-17 → 2027-04-24 (+7d) | -39.35d → -45.35d |
| 11 | **Duct Works** | 2027-02-27 → 2027-03-15 (+16d) | 2027-03-16 → 2027-03-23 (+7d) |  |
| MOD-SWN-PS-1034 | uPVC duct Track 1 – PS3 & PS4 for Sewerage Network Zone 3 | 2027-02-27 → 2027-03-15 (+16d) | 2027-02-28 → 2027-03-16 (+16d) | -39.35d → -45.35d |
| MOD-SWN-PS-1044 | uPVC duct Track 2 – PS3 & PS4 for Sewerage Network Zone 3 | 2027-02-28 → 2027-03-16 (+16d) | 2027-03-04 → 2027-03-18 (+14d) | -39.35d → -45.35d |
| MOD-SWN-PS-1054 | uPVC duct Track 8 – PS3 & PS4 for Sewerage Network Zone 3 | 2027-03-04 → 2027-03-18 (+14d) | 2027-03-16 → 2027-03-23 (+7d) | -39.35d → -45.35d |
| 12 | **Grounding Works** | 2027-03-16 → 2027-03-23 (+7d) | 2027-03-20 → 2027-03-27 (+7d) |  |
| MOD-SWN-PS-1064 | Grounding pit – PS3 & PS4 for Sewerage Network Zone 3 | 2027-03-16 → 2027-03-23 (+7d) | 2027-03-17 → 2027-03-24 (+7d) | -39.35d → -45.35d |
| MOD-SWN-PS-1074 | 600x600 Cable pull pit – PS3 & PS4 for Sewerage Network Zone 3 | 2027-03-17 → 2027-03-24 (+7d) | 2027-03-20 → 2027-03-27 (+7d) | -39.35d → -45.35d |
| 13 | **Landscaping / Interlocking Tiles** | 2027-03-20 → 2027-03-27 (+7d) | 2027-04-13 → 2027-04-20 (+7d) |  |
| MOD-SWN-PS-1084 | Building perimeter interlock tiles for Sewerage Network Zone 3 | 2027-03-20 → 2027-03-27 (+7d) | 2027-04-08 → 2027-04-15 (+7d) | -39.35d → -45.35d |
| MOD-SWN-PS-1094 | Entrance road paving tiles for Sewerage Network Zone 3 | 2027-04-08 → 2027-04-15 (+7d) | 2027-04-13 → 2027-04-20 (+7d) | -36.05d → -42.05d |
| 14 | **Pumping Station Internal Drainage Network** | 2027-03-20 → 2027-03-27 (+7d) | 2027-03-28 → 2027-04-04 (+7d) |  |
| MOD-SWN-PS-1104 | Internal surface drainage channels for Sewerage Network Zone 3 | 2027-03-20 → 2027-03-27 (+7d) | 2027-03-28 → 2027-04-04 (+7d) | -22.05d → -28.05d |
| 14 | **Rainwater Drainage Network Zone 3** |  | 2026-11-26 → 2026-12-03 (+7d) |  |
| 1 | **Pipe Laying Works** |  | 2026-11-01 → 2026-11-08 (+7d) |  |
| 2 | **Supply & Installation of uPVC Pipes (250–300mm dia)** |  | 2026-10-09 → 2026-10-16 (+7d) |  |
| MOD-RWN-PL-233 | Excavation to required depth UPVC for Rainwater Drainage Network Zone 3 |  | 2026-10-04 → 2026-10-11 (+7d) | -97.11d → -104.11d |
| MOD-RWN-PL-243 | Lean Concrete / Bedding UPVC for Rainwater Drainage Network Zone 3 |  | 2026-10-04 → 2026-10-11 (+7d) | -97.11d → -104.11d |
| MOD-RWN-PL-253 | Laying of uPVC pipe UPVC for Rainwater Drainage Network Zone 3 |  | 2026-10-05 → 2026-10-12 (+7d) | -97.11d → -104.11d |
| MOD-RWN-PL-283 | Test (Pressure-slope) UPVC for Rainwater Drainage Network Zone 3 |  | 2026-10-05 → 2026-10-12 (+7d) | -97.11d → -104.11d |
| MOD-RWN-PL-263 | Coating / Wrapping UPVC for Rainwater Drainage Network Zone 3 |  | 2026-10-06 → 2026-10-13 (+7d) | -71.31d → -78.31d |
| MOD-RWN-PL-293 | Backfilling & Warning Tape UPVC for Rainwater Drainage Network Zone 3 |  | 2026-10-09 → 2026-10-16 (+7d) | -74.91d → -81.91d |
| 3 | **Supply & Installation of GRP Pipes (350–800mm dia)** |  | 2026-10-23 → 2026-10-30 (+7d) |  |
| MOD-RWN-PL-343 | Test (Pressure-slope) GRP for Rainwater Drainage Network Zone 3 |  | 2026-10-08 → 2026-10-15 (+7d) | -89.06d → -96.06d |
| MOD-RWN-PL-344 | Coating / Wrapping GRP for Rainwater Drainage Network Zone 3 |  | 2026-10-18 → 2026-10-25 (+7d) | -89.06d → -96.06d |
| MOD-RWN-PL-353 | Backfilling & compaction GRP for Rainwater Drainage Network Zone 3 |  | 2026-10-23 → 2026-10-30 (+7d) | -89.06d → -96.06d |
| 4 | **uPVC Connection Pipes (150mm dia)** |  | 2026-11-01 → 2026-11-08 (+7d) |  |
| MOD-RWN-PL-373 | Excavate short trench paths UPVC Con. for Rainwater Drainage Network Zone 3 |  | 2026-10-03 → 2026-10-10 (+7d) | -95.29d → -102.29d |
| MOD-RWN-PL-383 | Lean Concrete / bedding material UPVC Con. for Rainwater Drainage Network Zone 3 |  | 2026-10-03 → 2026-10-10 (+7d) | -95.29d → -102.29d |
| MOD-RWN-PL-393 | Lay & connect UPVC Con. for Rainwater Drainage Network Zone 3 |  | 2026-10-06 → 2026-10-13 (+7d) | -97.11d → -104.11d |
| MOD-RWN-PL-403 | Test (Pressure-slope) UPVC Con. for Rainwater Drainage Network Zone 3 | 2026-10-06 → 2026-10-13 (+7d) | 2026-10-09 → 2026-10-16 (+7d) | -97.11d → -104.11d |
| MOD-RWN-PL-723 | Coating / Wrapping UPVC Con. for Rainwater Drainage Network Zone 3 | 2026-10-09 → 2026-10-16 (+7d) | 2026-10-30 → 2026-11-06 (+7d) | -97.11d → -104.11d |
| MOD-RWN-PL-413 | Backfilling & compaction UPVC Con. for Rainwater Drainage Network Zone 3 | 2026-10-30 → 2026-11-06 (+7d) | 2026-11-01 → 2026-11-08 (+7d) | -97.11d → -104.11d |
| 5 | **Precast Concrete Box Culverts** |  | 2026-11-26 → 2026-12-03 (+7d) |  |
| 1 | **Box Culverts (500x500mm to 3500x800mm)** |  | 2026-11-26 → 2026-12-03 (+7d) |  |
| MOD-RWN-PC-254 | Dewatering and trench shoring Box culvert for Rainwater Drainage Network Zone 3 |  | 2026-10-11 → 2026-10-18 (+7d) | -104.56d → -110.56d |
| MOD-RWN-PC-264 | Bedding preparation (gravel/lean concrete) Box culvert for Rainwater Drainage Network Zone 3 | 2026-10-11 → 2026-10-18 (+7d) | 2026-10-15 → 2026-10-22 (+7d) | -104.56d → -110.56d |
| MOD-RWN-PC-274 | Installation of box culvert units Box culvert for Rainwater Drainage Network Zone 3 | 2026-10-15 → 2026-10-22 (+7d) | 2026-10-27 → 2026-11-03 (+7d) | -104.56d → -110.56d |
| MOD-RWN-PC-284 | Alignment and joint sealing Box culvert for Rainwater Drainage Network Zone 3 | 2026-10-27 → 2026-11-03 (+7d) | 2026-11-01 → 2026-11-08 (+7d) | -104.56d → -110.56d |
| MOD-RWN-PC-294 | Construct headwalls/wing walls (if needed) Box culvert for Rainwater Drainage Network Zone 3 | 2026-11-01 → 2026-11-08 (+7d) | 2026-11-15 → 2026-11-22 (+7d) | -104.56d → -110.56d |
| MOD-RWN-PC-304 | Backfilling and compaction Box culvert for Rainwater Drainage Network Zone 3 | 2026-11-15 → 2026-11-22 (+7d) | 2026-11-23 → 2026-11-30 (+7d) | -104.56d → -110.56d |
| MOD-RWN-PC-314 | Surface finishing Box culvert for Rainwater Drainage Network Zone 3 | 2026-11-23 → 2026-11-30 (+7d) | 2026-11-26 → 2026-12-03 (+7d) | -104.56d → -110.56d |
| 4 | **Manholes** | 2026-10-15 → 2026-10-22 (+7d) | 2026-11-26 → 2026-12-03 (+7d) |  |
| 1 | **Circular GRP Manholes (1200–1800mm dia)** | 2026-10-15 → 2026-10-22 (+7d) | 2026-11-22 → 2026-11-29 (+7d) |  |
| MOD-RWN-MH-234 | Excavate to full manhole depth Circular Manhole for Rainwater Drainage Network Zone 3 | 2026-10-15 → 2026-10-22 (+7d) | 2026-10-24 → 2026-10-31 (+7d) | -100.56d → -106.56d |
| MOD-RWN-MH-244 | Dewatering and safety barriers Circular Manhole for Rainwater Drainage Network Zone 3 | 2026-10-24 → 2026-10-31 (+7d) | 2026-10-31 → 2026-11-07 (+7d) | -100.56d → -106.56d |
| MOD-RWN-MH-254 | Concrete base construction Circular Manhole for Rainwater Drainage Network Zone 3 | 2026-10-31 → 2026-11-07 (+7d) | 2026-11-02 → 2026-11-09 (+7d) | -100.56d → -106.56d |
| MOD-RWN-MH-264 | Install GRP manhole shaft sections Circular Manhole for Rainwater Drainage Network Zone 3 | 2026-11-02 → 2026-11-09 (+7d) | 2026-11-10 → 2026-11-17 (+7d) | -100.56d → -106.56d |
| MOD-RWN-MH-274 | Place slab and cover frame Circular Manhole for Rainwater Drainage Network Zone 3 | 2026-11-10 → 2026-11-17 (+7d) | 2026-11-17 → 2026-11-24 (+7d) | -100.56d → -106.56d |
| MOD-RWN-MH-284 | Waterproofing Circular Manhole for Rainwater Drainage Network Zone 3 | 2026-11-17 → 2026-11-24 (+7d) | 2026-11-19 → 2026-11-26 (+7d) | -100.56d → -106.56d |
| MOD-RWN-MH-294 | Backfilling and compaction Circular Manhole for Rainwater Drainage Network Zone 3 | 2026-11-19 → 2026-11-26 (+7d) | 2026-11-22 → 2026-11-29 (+7d) | -100.56d → -106.56d |
| 3 | **Concrete Manholes for 1500x1500 Box Pipes** | 2026-10-15 → 2026-10-22 (+7d) | 2026-11-22 → 2026-11-29 (+7d) |  |
| MOD-RWN-MH-374 | Excavation Concrete Manhole 1.5x1.5 for Rainwater Drainage Network Zone 3 | 2026-10-15 → 2026-10-22 (+7d) | 2026-10-22 → 2026-10-29 (+7d) | -100.56d → -106.56d |
| MOD-RWN-MH-384 | Base slab and wall shuttering Concrete Manhole 1.5x1.5 for Rainwater Drainage Network Zone 3 | 2026-10-22 → 2026-10-29 (+7d) | 2026-10-27 → 2026-11-03 (+7d) | -100.56d → -106.56d |
| MOD-RWN-MH-394 | Wall reinforcement and casting Concrete Manhole 1.5x1.5 for Rainwater Drainage Network Zone 3 | 2026-10-27 → 2026-11-03 (+7d) | 2026-11-05 → 2026-11-12 (+7d) | -100.56d → -106.56d |
| MOD-RWN-MH-404 | Roof slab with openings Concrete Manhole 1.5x1.5 for Rainwater Drainage Network Zone 3 | 2026-11-05 → 2026-11-12 (+7d) | 2026-11-10 → 2026-11-17 (+7d) | -100.56d → -106.56d |
| MOD-RWN-MH-414 | Masonry/benching works inside Concrete Manhole 1.5x1.5 for Rainwater Drainage Network Zone 3 | 2026-11-10 → 2026-11-17 (+7d) | 2026-11-16 → 2026-11-23 (+7d) | -100.56d → -106.56d |
| MOD-RWN-MH-424 | Install cover and frame Concrete Manhole 1.5x1.5 for Rainwater Drainage Network Zone 3 | 2026-11-16 → 2026-11-23 (+7d) | 2026-11-18 → 2026-11-25 (+7d) | -100.56d → -106.56d |
| MOD-RWN-MH-434 | Backfill in layers Concrete Manhole 1.5x1.5 for Rainwater Drainage Network Zone 3 | 2026-11-18 → 2026-11-25 (+7d) | 2026-11-22 → 2026-11-29 (+7d) | -100.56d → -106.56d |

| ID | Task | Start | Finish | Complete | Total float |
| --- | --- | --- | --- | --- | --- |
| 2 | **Concrete Manholes for 1000x1000 Box Pipes** | 2026-10-15 → 2026-10-22 (+7d) | 2026-11-26 → 2026-12-03 (+7d) |  |  |
| MOD-RWN-MH-304 | Excavation Concrete Manhole 1x1 for Rainwater Drainage Network Zone 3 | 2026-10-15 → 2026-10-22 (+7d) | 2026-10-22 → 2026-10-29 (+7d) |  | -104.56d → -110.56d |
| MOD-RWN-MH-314 | Base slab and wall shuttering Concrete Manhole 1x1 for Rainwater Drainage Network Zone 3 | 2026-10-22 → 2026-10-29 (+7d) | 2026-10-27 → 2026-11-03 (+7d) |  | -104.56d → -110.56d |
| MOD-RWN-MH-324 | Wall reinforcement and casting Concrete Manhole 1x1 for Rainwater Drainage Network Zone 3 | 2026-10-27 → 2026-11-03 (+7d) | 2026-11-03 → 2026-11-10 (+7d) |  | -104.56d → -110.56d |
| MOD-RWN-MH-334 | Roof slab with openings Concrete Manhole 1x1 for Rainwater Drainage Network Zone 3 | 2026-11-03 → 2026-11-10 (+7d) | 2026-11-08 → 2026-11-15 (+7d) |  | -104.56d → -110.56d |
| MOD-RWN-MH-344 | Masonry/benching works inside Concrete Manhole 1x1 for Rainwater Drainage Network Zone 3 | 2026-11-08 → 2026-11-15 (+7d) | 2026-11-16 → 2026-11-23 (+7d) |  | -104.56d → -110.56d |
| MOD-RWN-MH-354 | Install cover and frame Concrete Manhole 1x1 for Rainwater Drainage Network Zone 3 | 2026-11-16 → 2026-11-23 (+7d) | 2026-11-21 → 2026-11-28 (+7d) |  | -104.56d → -110.56d |
| MOD-RWN-MH-364 | Backfill in layers Concrete Manhole 1x1 for Rainwater Drainage Network Zone 3 | 2026-11-21 → 2026-11-28 (+7d) | 2026-11-26 → 2026-12-03 (+7d) |  | -104.56d → -110.56d |
| 2 | **Chambers and Catch Basins** |  | 2026-10-21 → 2026-10-28 (+7d) |  |  |
| 1 | **Gully Outfalls** |  | 2026-10-17 → 2026-10-24 (+7d) |  |  |
| MOD-RWN-CC-198 | Provide slope protection (riprap) Gully Outfall for Rainwater Drainage Network Zone 3 |  | 2026-10-15 → 2026-10-22 (+7d) |  | -69.72d → -75.72d |
| MOD-RWN-CC-208 | Compact and shape terrain Gully Outfall for Rainwater Drainage Network Zone 3 |  | 2026-10-17 → 2026-10-24 (+7d) |  | -69.72d → -75.72d |
| 2 | **Rainwater Catch Basins** |  | 2026-10-15 → 2026-10-22 (+7d) |  |  |
| MOD-RWN-CC-258 | Backfill and surface finish Catch Basin for Rainwater Drainage Network Zone 3 |  | 2026-10-15 → 2026-10-22 (+7d) |  | -68.68d → -74.68d |
| 3 | **Precast Chambers for Absorption Pits** |  | 2026-10-21 → 2026-10-28 (+7d) |  |  |
| MOD-RWN-CC-308 | Backfill and compact Absorption Pit for Rainwater Drainage Network Zone 3 | 2026-10-15 → 2026-10-22 (+7d) | 2026-10-21 → 2026-10-28 (+7d) |  | -73.56d → -79.56d |
| 3 | **Gully Outfalls to Swales** |  | 2026-11-05 → 2026-11-12 (+7d) |  |  |
| 1 | **Gully Outfalls to Swales** |  | 2026-10-20 → 2026-10-27 (+7d) |  |  |
| MOD-RWN-GO-111 | Excavate outfall channel Gully Outfall to Swales for Rainwater Drainage Network Zone 3 |  | 2026-10-15 → 2026-10-22 (+7d) |  | -72.56d → -78.56d |
| MOD-RWN-GO-121 | Place concrete apron or pipes Gully Outfall to Swales for Rainwater Drainage Network Zone 3 |  | 2026-10-17 → 2026-10-24 (+7d) |  | -72.56d → -78.56d |
| MOD-RWN-GO-131 | Provide slope protection (riprap) Gully Outfall to Swales for Rainwater Drainage Network Zone 3 |  | 2026-10-18 → 2026-10-25 (+7d) |  | -72.56d → -78.56d |
| MOD-RWN-GO-141 | Compact and shape terrain Gully Outfall to Swales for Rainwater Drainage Network Zone 3 | 2026-10-18 → 2026-10-25 (+7d) | 2026-10-20 → 2026-10-27 (+7d) |  | -72.56d → -78.56d |
| 2 | **Riprap Works & Protection** | 2026-10-15 → 2026-10-22 (+7d) | 2026-11-05 → 2026-11-12 (+7d) |  |  |
| MOD-RWN-GO-151 | Lay filter fabric/membrane for Rainwater Drainage Network Zone 3 | 2026-10-15 → 2026-10-22 (+7d) | 2026-10-19 → 2026-10-26 (+7d) |  | -86.56d → -92.56d |
| MOD-RWN-GO-161 | Place riprap/stone layer for Rainwater Drainage Network Zone 3 | 2026-10-19 → 2026-10-26 (+7d) | 2026-10-31 → 2026-11-07 (+7d) |  | -86.56d → -92.56d |
| MOD-RWN-GO-171 | Compact edges for Rainwater Drainage Network Zone 3 | 2026-10-31 → 2026-11-07 (+7d) | 2026-11-03 → 2026-11-10 (+7d) |  | -86.56d → -92.56d |
| MOD-RWN-GO-181 | Ensure hydraulic flow direction for Rainwater Drainage Network Zone 3 | 2026-11-03 → 2026-11-10 (+7d) | 2026-11-05 → 2026-11-12 (+7d) |  | -86.56d → -92.56d |
| 6 | **Backfilling & Bedding** |  | 2026-10-26 → 2026-11-02 (+7d) |  |  |
| 1 | **Backfilling Materials (Type A – 201–700mm Pipes)** |  | 2026-10-04 → 2026-10-11 (+7d) |  |  |
| MOD-RWN-BB-112 | Place granular bedding under pipe for Rainwater Drainage Network Zone 3 |  | 2026-10-03 → 2026-10-10 (+7d) |  | -58.65d → -64.65d |
| MOD-RWN-BB-122 | Lay and align pipe for Rainwater Drainage Network Zone 3 |  | 2026-10-03 → 2026-10-10 (+7d) |  | -58.65d → -64.65d |
| MOD-RWN-BB-132 | Backfill up to spring line for Rainwater Drainage Network Zone 3 |  | 2026-10-04 → 2026-10-11 (+7d) |  | -58.65d → -64.65d |
| MOD-RWN-BB-142 | Compact layer-wise for Rainwater Drainage Network Zone 3 |  | 2026-10-04 → 2026-10-11 (+7d) |  | -58.65d → -64.65d |
| MOD-RWN-BB-152 | Final fill to subgrade level for Rainwater Drainage Network Zone 3 |  | 2026-10-04 → 2026-10-11 (+7d) |  | -58.65d → -64.65d |
| 2 | **Gravel Bedding & Filter Cloth for uPVC Drain Pipes** |  | 2026-10-26 → 2026-11-02 (+7d) |  |  |
| MOD-RWN-BB-162 | Line trench with filter cloth for Rainwater Drainage Network Zone 3 |  | 2026-10-03 → 2026-10-10 (+7d) |  | -77.56d → -83.56d |
| MOD-RWN-BB-172 | Place and compact gravel bedding for Rainwater Drainage Network Zone 3 |  | 2026-10-04 → 2026-10-11 (+7d) |  | -77.56d → -83.56d |
| MOD-RWN-BB-182 | Lay pipe within gravel zone for Rainwater Drainage Network Zone 3 |  | 2026-10-06 → 2026-10-13 (+7d) |  | -77.56d → -83.56d |
| MOD-RWN-BB-192 | Wrap filter cloth above pipe for Rainwater Drainage Network Zone 3 |  | 2026-10-12 → 2026-10-19 (+7d) |  | -77.56d → -83.56d |
| MOD-RWN-BB-202 | Final fill and trench restoration for Rainwater Drainage Network Zone 3 | 2026-10-12 → 2026-10-19 (+7d) | 2026-10-26 → 2026-11-02 (+7d) |  | -77.56d → -83.56d |
| 7 | **Deep Basin for Groundwater Collection (2.5–3.0m)** |  | 2026-10-26 → 2026-11-02 (+7d) |  |  |
| MOD-RWN-DB-002 | Base and side wall construction (cast-in-situ or precast) for Rainwater Drainage Network Zone 3 |  | 2026-10-04 → 2026-10-11 (+7d) |  | -77.71d → -83.71d |
| MOD-RWN-DB-003 | Pipe connections for inflow for Rainwater Drainage Network Zone 3 |  | 2026-10-06 → 2026-10-13 (+7d) |  | -77.71d → -83.71d |
| MOD-RWN-DB-004 | Cover slab and access shaft for Rainwater Drainage Network Zone 3 |  | 2026-10-10 → 2026-10-17 (+7d) |  | -77.71d → -83.71d |
| MOD-RWN-DB-005 | Waterproofing & sealant for Rainwater Drainage Network Zone 3 |  | 2026-10-18 → 2026-10-25 (+7d) |  | -77.71d → -83.71d |
| MOD-RWN-DB-006 | Backfill in controlled layers for Rainwater Drainage Network Zone 3 | 2026-10-18 → 2026-10-25 (+7d) | 2026-10-26 → 2026-11-02 (+7d) |  | -77.71d → -83.71d |
| 13 | **Potable Water Network Zone 3** |  | 2026-12-22 → 2026-12-29 (+7d) |  |  |
| 13 | **Pipe Installation Works** |  | 2026-10-13 → 2026-10-20 (+7d) |  |  |
| MOD-PWN-PI-323 | Lean Concrete / Pipe Bedding Preparation for Potable Water Network Zone 3 |  | 2026-10-04 → 2026-10-11 (+7d) |  | 79.15d → 72.15d |
| MOD-PWN-PI-333 | HDPE Pipe Laying (200 mm to 710 mm) for Potable Water Network Zone 3 |  | 2026-10-08 → 2026-10-15 (+7d) |  | 79.15d → 72.15d |
| MOD-PWN-PI-343 | Test (Pressure-slope) for Potable Water Network Zone 3 |  | 2026-10-09 → 2026-10-16 (+7d) |  | 79.15d → 72.15d |
| MOD-PWN-PI-353 | Coating / Wrapping for Potable Water Network Zone 3 |  | 2026-10-11 → 2026-10-18 (+7d) |  | 79.15d → 72.15d |
| MOD-PWN-PI-363 | Backfilling & Warrning Tape for Potable Water Network Zone 3 |  | 2026-10-13 → 2026-10-20 (+7d) |  | 79.15d → 72.15d |
| 2 | **Valve Installation & Chambers** |  | 2026-10-27 → 2026-11-02 (+6d) |  |  |
| MOD-PWN-VC-87 | Butterfly Valves (355, 500, 630 mm) for Potable Water Network Zone 3 |  | 2026-10-04 → 2026-10-10 (+6d) | 90% → 98% | 57.06d → 51.06d |
| MOD-PWN-VC-97 | 3-exit (2 x 2.5-inch and 1 x 4-inch) dry vacuum cylinder detachable fire nozzle for Potable Water Network Zone 3 |  | 2026-10-03 → 2026-10-10 (+7d) |  | 57.06d → 51.06d |
| MOD-PWN-VC-107 | Valve Chamber Excavation for Potable Water Network Zone 3 |  | 2026-10-03 → 2026-10-10 (+7d) | 90% → 98% | 49.56d → 51.06d |
| MOD-PWN-VC-117 | RC Slab, Walls, or Precast Chambers for Potable Water Network Zone 3 |  | 2026-10-04 → 2026-10-10 (+6d) | 90% → 98% | 55.7d → 51.06d |
| MOD-PWN-VC-77 | Gate Valves (225–710 mm) for Potable Water Network Zone 3 |  | 2026-10-04 → 2026-10-10 (+6d) | 90% → 98% | 57.06d → 51.06d |
| MOD-PWN-VC-127 | Fixing Covers, Gratings, Frames for Potable Water Network Zone 3 | 2026-10-04 → 2026-10-10 (+6d) | 2026-10-20 → 2026-10-26 (+6d) |  | 55.7d → 51.06d |
| MOD-PWN-VC-137 | Tagging & Painting for Potable Water Network Zone 3 | 2026-10-20 → 2026-10-26 (+6d) | 2026-10-27 → 2026-11-02 (+6d) |  | 55.7d → 51.06d |
| 3 | **Flow Meter Installation** |  | 2026-11-23 → 2026-11-21 (-2d) |  |  |
| MOD-PWN-FM-55 | Chamber Excavation (280 mm, 300 mm, 500 mm, 800 mm) for Potable Water Network Zone 3 |  | 2026-10-05 → 2026-10-10 (+5d) | 83% → 90% | 49.56d → 54.4d |
| MOD-PWN-FM-65 | RC or Precast Chamber Construction for Potable Water Network Zone 3 |  | 2026-10-10 → 2026-10-14 (+4d) | 44% → 60% | 49.56d → 54.4d |
| MOD-PWN-FM-75 | Flowmeter Installation & Pipe Integration for Potable Water Network Zone 3 | 2026-10-29 → 2026-09-08 A (-51d) | 2026-11-10 → 2026-11-11 (+1d) | 0% → 50% | 33.15d → 35.35d |
| MOD-PWN-FM-85 | Wiring/Cabling if applicable for Potable Water Network Zone 3 | 2026-11-10 → 2026-09-15 A (-56d) | 2026-11-19 → 2026-11-17 (-2d) | 0% → 40% | 33.15d → 35.35d |
| MOD-PWN-FM-95 | Calibration & Commissioning for Potable Water Network Zone 3 | 2026-11-19 → 2026-11-17 (-2d) | 2026-11-23 → 2026-11-21 (-2d) |  | 33.15d → 35.35d |
| 4 | **Washout & Air Valve Chambers** |  | 2026-10-12 → 2026-10-15 (+3d) |  |  |
| MOD-PWN-WA-87 | RC Blinding + Base + Walls for Potable Water Network Zone 3 |  | 2026-10-03 → 2026-10-10 (+7d) | 90% → 95% | 68.6d → 65.66d |
| MOD-PWN-WA-97 | Pipe Work for Potable Water Network Zone 3 |  | 2026-10-06 → 2026-10-11 (+5d) | 80% → 90% | 68.6d → 65.66d |

| ID | Task | Start | Finish | Complete | Total float |
| --- | --- | --- | --- | --- | --- |
| MOD-PWN-WA-107 | Washout (Valve + Outlet) Installation for Potable Water Network Zone 3 |  | 2026-10-07 → 2026-10-12 (+5d) | 80% → 88% | 68.6d → 65.66d |
| MOD-PWN-WA-117 | Air Valve Rooms (Valve + Outlet) Installation for Potable Water Network Zone 3 |  | 2026-10-10 → 2026-10-13 (+3d) | 80% → 88% | 68.6d → 65.66d |
| MOD-PWN-WA-127 | Covers, Ladders & Tags for Potable Water Network Zone 3 |  | 2026-10-10 → 2026-10-13 (+3d) | 80% → 88% | 68.6d → 65.66d |
| MOD-PWN-WA-137 | Backfilling & Final Finishing for Potable Water Network Zone 3 | 2026-10-10 → 2026-10-13 (+3d) | 2026-10-12 → 2026-10-15 (+3d) |  | 68.6d → 65.66d |
| 5 | **Pumping Station (Structure & Civil Works)** | 2026-10-03 → 2026-10-10 (+7d) | 2026-12-17 → 2026-12-24 (+7d) |  |  |
| MOD-PWN-PS-66 | Excavation & Blinding for Potable Water Network Zone 3 | 2026-10-03 → 2026-10-10 (+7d) | 2026-10-13 → 2026-10-20 (+7d) |  | 8.2d → 2.2d |
| MOD-PWN-PS-76 | Reinforced Concrete/GRP Shell Construction for Potable Water Network Zone 3 | 2026-10-14 → 2026-10-21 (+7d) | 2026-10-22 → 2026-10-29 (+7d) |  | 8.2d → 2.2d |
| MOD-PWN-PS-86 | Access Ladders, Tight Cover, Surface Guttering for Potable Water Network Zone 3 | 2026-10-24 → 2026-10-31 (+7d) | 2026-10-28 → 2026-11-04 (+7d) |  | 8.2d → 2.2d |
| MOD-PWN-PS-96 | Internal piping & embedded sleeves for Potable Water Network Zone 3 | 2026-10-29 → 2026-11-05 (+7d) | 2026-11-12 → 2026-11-19 (+7d) |  | 8.2d → 2.2d |
| MOD-PWN-PS-106 | Pump Base Pads + Grouting for Potable Water Network Zone 3 | 2026-11-14 → 2026-11-21 (+7d) | 2026-11-28 → 2026-12-05 (+7d) |  | 11.4d → 5.4d |
| MOD-PWN-PS-116 | Backfilling & External Finishes for Potable Water Network Zone 3 | 2026-11-29 → 2026-12-06 (+7d) | 2026-12-17 → 2026-12-24 (+7d) |  | 11.4d → 5.4d |
| 6 | **Pump Station Building** | 2026-11-14 → 2026-11-21 (+7d) | 2026-12-19 → 2026-12-26 (+7d) |  |  |
| MOD-PWN-PB-33 | Structure Construction (as per architectural drawings) for Potable Water Network Zone 3 | 2026-11-14 → 2026-11-21 (+7d) | 2026-11-28 → 2026-12-05 (+7d) |  | 8.2d → 2.2d |
| MOD-PWN-PB-43 | 5-ton Hoist Installation for Potable Water Network Zone 3 | 2026-11-29 → 2026-12-06 (+7d) | 2026-12-03 → 2026-12-10 (+7d) |  | 8.2d → 2.2d |
| MOD-PWN-PB-53 | Finishes, Doors, Ventilation for Potable Water Network Zone 3 | 2026-12-05 → 2026-12-12 (+7d) | 2026-12-19 → 2026-12-26 (+7d) |  | 8.2d → 2.2d |
| 7 | **Pumping Equipment & Fire Systems** | 2026-11-14 → 2026-11-21 (+7d) | 2026-12-15 → 2026-12-22 (+7d) |  |  |
| MOD-PWN-PE-88 | Main Pumps (250 kW, 295 L/s @ 60 m head) for Potable Water Network Zone 3 | 2026-11-14 → 2026-11-21 (+7d) | 2026-11-29 → 2026-12-06 (+7d) |  | 13.4d → 7.4d |
| MOD-PWN-PE-108 | Diesel Fire Water Pump (64 L/s @ 60 m) for Potable Water Network Zone 3 | 2026-11-30 → 2026-12-07 (+7d) | 2026-12-06 → 2026-12-13 (+7d) |  | 13.4d → 7.4d |
| MOD-PWN-PE-118 | Electric Jockey Pump for Potable Water Network Zone 3 | 2026-11-30 → 2026-12-07 (+7d) | 2026-12-06 → 2026-12-13 (+7d) |  | 13.4d → 7.4d |
| MOD-PWN-PE-128 | Submersible Fire Pumps (2 pcs, 10 L/s @ 10 m) for Potable Water Network Zone 3 | 2026-11-30 → 2026-12-07 (+7d) | 2026-12-03 → 2026-12-10 (+7d) |  | 13.4d → 7.4d |
| MOD-PWN-PE-98 | Electric Fire Water Pump (64 L/s @ 60 m) for Potable Water Network Zone 3 | 2026-11-30 → 2026-12-07 (+7d) | 2026-12-08 → 2026-12-15 (+7d) |  | 13.4d → 7.4d |
| MOD-PWN-PE-138 | Pipework connections within Pump Room for Potable Water Network Zone 3 | 2026-12-05 → 2026-12-12 (+7d) | 2026-12-09 → 2026-12-16 (+7d) |  | 13.4d → 7.4d |
| MOD-PWN-PE-148 | MCC & DB panel installation for Potable Water Network Zone 3 | 2026-12-10 → 2026-12-17 (+7d) | 2026-12-12 → 2026-12-19 (+7d) |  | 13.4d → 7.4d |
| MOD-PWN-PE-158 | Flow meter on 800mm pipe including flow meter chamber and 2-2.5m depth for Potable Water Network Zone 3 | 2026-12-13 → 2026-12-20 (+7d) | 2026-12-15 → 2026-12-22 (+7d) |  | 13.4d → 7.4d |
| 8 | **Surge Protection** | 2026-12-10 → 2026-12-17 (+7d) | 2026-12-15 → 2026-12-22 (+7d) |  |  |
| MOD-PWN-SP-22 | Surge Vessel Installation for Potable Water Network Zone 3 | 2026-12-10 → 2026-12-17 (+7d) | 2026-12-14 → 2026-12-21 (+7d) |  | 13.4d → 7.4d |
| MOD-PWN-SP-32 | Pipe Integration as per Surge Analysis for Potable Water Network Zone 3 | 2026-12-15 → 2026-12-22 (+7d) | 2026-12-15 → 2026-12-22 (+7d) |  | 13.4d → 7.4d |
| 9 | **Power & Generator System** | 2026-11-30 → 2026-12-07 (+7d) | 2026-12-13 → 2026-12-20 (+7d) |  |  |
| MOD-PWN-PG-44 | 500 kVA Standby Generator Installation for Potable Water Network Zone 3 | 2026-11-30 → 2026-12-07 (+7d) | 2026-12-03 → 2026-12-10 (+7d) |  | 15.4d → 9.4d |
| MOD-PWN-PG-54 | Canopy, Foundation & Fuel Tank for Potable Water Network Zone 3 | 2026-11-30 → 2026-12-07 (+7d) | 2026-12-06 → 2026-12-13 (+7d) |  | 15.4d → 9.4d |
| MOD-PWN-PG-64 | Electrical Cabling, Circuit Breakers for Potable Water Network Zone 3 | 2026-12-07 → 2026-12-14 (+7d) | 2026-12-10 → 2026-12-17 (+7d) |  | 15.4d → 9.4d |
| MOD-PWN-PG-74 | Earthing & Commissioning for Potable Water Network Zone 3 | 2026-12-12 → 2026-12-19 (+7d) | 2026-12-13 → 2026-12-20 (+7d) |  | 15.4d → 9.4d |
| 10 | **Chlorination System** | 2026-11-30 → 2026-12-07 (+7d) | 2026-12-15 → 2026-12-22 (+7d) |  |  |
| MOD-PWN-CS-33 | Chlorination Device Supply & Installation for Potable Water Network Zone 3 | 2026-11-30 → 2026-12-07 (+7d) | 2026-12-07 → 2026-12-14 (+7d) |  | 13.4d → 7.4d |
| MOD-PWN-CS-43 | Connections to Main Line or Disinfection Chamber for Potable Water Network Zone 3 | 2026-12-08 → 2026-12-15 (+7d) | 2026-12-12 → 2026-12-19 (+7d) |  | 13.4d → 7.4d |
| MOD-PWN-CS-53 | Control Integration for Potable Water Network Zone 3 | 2026-12-13 → 2026-12-20 (+7d) | 2026-12-15 → 2026-12-22 (+7d) |  | 13.4d → 7.4d |
| 11 | **Water Storage System** |  | 2026-12-22 → 2026-12-29 (+7d) |  |  |
| MOD-PWN-WS-11 | Structural tanks for supply or pressure equalization for Potable Water Network Zone 3 |  | 2026-12-22 → 2026-12-29 (+7d) |  | 8.2d → 2.2d |
| 12 | **Street Lighting** |  | 2026-12-07 → 2026-12-13 (+6d) |  |  |
| MOD-PWN-SL-75 | Pole & Fixture Installation for Potable Water Network Zone 3 |  | 2026-11-30 → 2026-12-06 (+6d) | 90% → 99% | 20.8d → 16.24d |
| MOD-PWN-SL-65 | Conduits, Cabling, Backfilling for Potable Water Network Zone 3 |  | 2026-11-30 → 2026-12-06 (+6d) | 90% → 99% | 20.8d → 16.24d |
| MOD-PWN-SL-85 | Connection to Main Supply for Potable Water Network Zone 3 | 2026-11-30 → 2026-12-06 (+6d) | 2026-12-07 → 2026-12-13 (+6d) |  | 20.8d → 16.24d |
| MOD-PWN-SL-95 | Testing & Lighting Commissioning for Potable Water Network Zone 3 | 2026-11-30 → 2026-12-06 (+6d) | 2026-12-07 → 2026-12-13 (+6d) |  | 20.8d → 16.24d |
| 1 | **Excavation, Pipe Laying & Backfilling** |  | 2026-10-09 → 2026-10-16 (+7d) |  |  |
| MOD-IRN-EB-120 | Trench Excavation for Irrigation Network Zone 3 |  | 2026-10-05 → 2026-10-12 (+7d) |  | 82.48d → 75.48d |
| MOD-IRN-EB-130 | Lean Concrete / Pipe Bedding with Type B Material for Irrigation Network Zone 3 |  | 2026-10-05 → 2026-10-12 (+7d) |  | 82.48d → 75.48d |
| MOD-IRN-EB-140 | HDPE Pipe Laying (125 mm to 630 mm) for Irrigation Network Zone 3 |  | 2026-10-08 → 2026-10-15 (+7d) |  | 82.48d → 75.48d |
| MOD-IRN-EB-150 | Test (Pressure-slope) for Irrigation Network Zone 3 |  | 2026-10-08 → 2026-10-15 (+7d) |  | 82.48d → 75.48d |
| MOD-IRN-EB-180 | Coating / Wrapping for Irrigation Network Zone 3 |  | 2026-10-08 → 2026-10-15 (+7d) |  | 82.48d → 75.48d |
| MOD-IRN-EB-190 | Backfilling & Warrning Tape for Irrigation Network Zone 3 |  | 2026-10-09 → 2026-10-16 (+7d) |  | 82.48d → 75.48d |
| 2 | **Valves and Appurtenances** |  | 2026-10-06 → 2026-10-13 (+7d) |  |  |
| MOD-IRN-VA-65 | Supply & Installation of Valves (Butterfly Valve) for Irrigation Network Zone 3 |  | 2026-10-04 → 2026-10-11 (+7d) |  | 74d → 68d |
| MOD-IRN-VA-75 | Installation of Flanges, Bolts, Collars, Nuts for Irrigation Network Zone 3 |  | 2026-10-05 → 2026-10-12 (+7d) |  | 74d → 68d |
| MOD-IRN-VA-85 | Valve Pressure Testing for Irrigation Network Zone 3 |  | 2026-10-05 → 2026-10-12 (+7d) |  | 74d → 68d |
| MOD-IRN-VA-95 | Support Brackets/Anchor Blocks for Irrigation Network Zone 3 |  | 2026-10-06 → 2026-10-13 (+7d) |  | 74d → 68d |
| 3 | **Valve Rooms** |  | 2026-10-03 → 2026-10-10 (+7d) |  |  |
| MOD-IRN-VR-137 | Backfilling and Finishing Valve Chamber for Irrigation Network Zone 3 |  | 2026-10-03 → 2026-10-10 (+7d) |  | 77.1d → 71.1d |
| 4 | **Washout Chambers** |  | 2026-10-04 → 2026-10-11 (+7d) |  |  |
| MOD-IRN-WC-96 | Washout Valve & Pipe Connection Washout Chamber for Irrigation Network Zone 3 |  | 2026-10-03 → 2026-10-10 (+7d) |  | 76.1d → 70.1d |
| MOD-IRN-WC-106 | Manhole Frame, Cover & Ladder Fixing Washout Chamber for Irrigation Network Zone 3 |  | 2026-10-03 → 2026-10-10 (+7d) |  | 76.1d → 70.1d |
| MOD-IRN-WC-116 | Backfilling & Reinstatement Washout Chamber for Irrigation Network Zone 3 |  | 2026-10-04 → 2026-10-11 (+7d) |  | 76.1d → 70.1d |
| 5 | **Air Valve Chambers** |  | 2026-10-03 → 2026-10-10 (+7d) |  |  |
| MOD-IRN-AC-95 | Cover Fixing & Finishing Air Valve Chamber for Irrigation Network Zone 3 |  | 2026-10-03 → 2026-10-10 (+7d) |  | 77.3d → 71.3d |
| MOD-IRN-FC-76 | RCC Base & Wall Construction Flow Meter Chamber for Irrigation Network Zone 3 |  | 2026-10-03 → 2026-10-10 (+7d) | 75% → 80% |  |
| MOD-IRN-FC-86 | Flow Meter Installation (280, 300, 500 mm) Flow Meter Chamber for Irrigation Network Zone 3 |  | 2026-11-01 → 2026-11-07 (+6d) | 60% → 80% | 39.75d → 39.55d |
| MOD-IRN-FC-96 | Integration with Pipework Flow Meter Chamber for Irrigation Network Zone 3 |  | 2026-11-03 → 2026-11-08 (+5d) | 60% → 80% | 39.75d → 39.55d |
| MOD-IRN-FC-106 | Testing & Calibration Flow Meter Chamber for Irrigation Network Zone 3 | 2026-11-03 → 2026-07-21 A (-105d) |  | 0% → 60% | 39.75d → 39.55d |
| 5 | **Sewerage Network Zone 2** |  | 2026-12-08 → 2026-12-15 (+7d) |  |  |
| 1 | **Pipework: Supply, Installation, and Testing** |  | 2026-11-25 → 2026-12-02 (+7d) |  |  |
| 3 | **HDPE Pressure Pipes Installation (250mm–630mm)** |  | 2026-11-25 → 2026-12-02 (+7d) |  |  |

| ID | Task | Start | Finish | Total float |
| --- | --- | --- | --- | --- |
| MOD-SWN-PW-585 | Excavation and Trenching HDPE for Sewerage Network Zone 2 |  | 2026-10-07 → 2026-10-14 (+7d) | 94.1d → 87.1d |
| MOD-SWN-PW-595 | Lean Concrete / Bedding HDPE for Sewerage Network Zone 2 |  | 2026-10-15 → 2026-10-22 (+7d) | 94.1d → 87.1d |
| MOD-SWN-PW-465 | HDPE Pressure Pipes Installation (250mm–630mm) HDPE for Sewerage Network Zone 2 |  | 2026-10-26 → 2026-11-02 (+7d) | 94.1d → 87.1d |
| MOD-SWN-PW-605 | Test (Pressure - Slope) HDPE for Sewerage Network Zone 2 |  | 2026-11-02 → 2026-11-09 (+7d) | 112.7d → 105.7d |
| MOD-SWN-PW-615 | Coating / Wrapping HDPE for Sewerage Network Zone 2 |  | 2026-11-10 → 2026-11-17 (+7d) | 112.7d → 105.7d |
| MOD-SWN-PW-575 | Backfilling & Warrning Tape HDPE for Sewerage Network Zone 2 | 2026-11-11 → 2026-11-18 (+7d) | 2026-11-25 → 2026-12-02 (+7d) | 112.7d → 105.7d |
| 2 | **Fittings and Valves** | 2026-10-26 → 2026-11-02 (+7d) | 2026-11-26 → 2026-12-03 (+7d) |  |
| MOD-SWN-FV-5 | Supply & Installation of HDPE Elbows for Sewerage Network Zone 2 | 2026-10-26 → 2026-11-02 (+7d) | 2026-11-02 → 2026-11-09 (+7d) | 81.1d → 75.1d |
| MOD-SWN-FV-15 | Gate Valves Installation for Sewerage Network Zone 2 | 2026-11-02 → 2026-11-09 (+7d) | 2026-11-07 → 2026-11-14 (+7d) | 81.1d → 75.1d |
| MOD-SWN-FV-25 | Drain Valves Installation for Sewerage Network Zone 2 | 2026-11-07 → 2026-11-14 (+7d) | 2026-11-11 → 2026-11-18 (+7d) | 81.1d → 75.1d |
| MOD-SWN-FV-35 | Air Breather & Air Release Valves Installation for Sewerage Network Zone 2 | 2026-11-11 → 2026-11-18 (+7d) | 2026-11-23 → 2026-11-30 (+7d) | 81.1d → 75.1d |
| MOD-SWN-FV-45 | Jointing & Piping Accessories Installation for Sewerage Network Zone 2 | 2026-11-23 → 2026-11-30 (+7d) | 2026-11-26 → 2026-12-03 (+7d) | 81.1d → 75.1d |
| 3 | **Valve & Flow Meter Chambers** |  | 2026-12-08 → 2026-12-15 (+7d) |  |
| 1 | **Valve Chambers Construction** |  | 2026-11-17 → 2026-11-24 (+7d) |  |
| MOD-SWN-PW-975 | Excavation Valve Chamber for Sewerage Network Zone 2 |  | 2026-10-07 → 2026-10-14 (+7d) | 100.1d → 93.1d |
| MOD-SWN-PW-985 | Lean Concrete / Bedding Valve Chamber for Sewerage Network Zone 2 |  | 2026-10-15 → 2026-10-22 (+7d) | 100.1d → 93.1d |
| MOD-SWN-VF-124 | Valve Chambers Construction Valve Chamber for Sewerage Network Zone 2 |  | 2026-10-18 → 2026-10-25 (+7d) | 100.1d → 93.1d |
| MOD-SWN-PW-995 | Test Valve Chamber for Sewerage Network Zone 2 | 2026-10-18 → 2026-10-25 (+7d) | 2026-11-02 → 2026-11-09 (+7d) | 121.1d → 114.1d |
| MOD-SWN-PW-965 | Backfilling Valve Chamber for Sewerage Network Zone 2 | 2026-11-02 → 2026-11-09 (+7d) | 2026-11-17 → 2026-11-24 (+7d) | 121.1d → 114.1d |
| 2 | **Water Drain Chambers Construction** |  | 2026-11-27 → 2026-12-04 (+7d) |  |
| MOD-SWN-PW-1015 | Excavation Water Drain Chamber for Sewerage Network Zone 2 |  | 2026-10-07 → 2026-10-14 (+7d) | 103.1d → 96.1d |
| MOD-SWN-PW-1025 | Lean Concrete / Bedding Water Drain Chamber for Sewerage Network Zone 2 |  | 2026-10-15 → 2026-10-22 (+7d) | 103.1d → 96.1d |
| MOD-SWN-VF-134 | Water Drain Chambers Construction Water Drain Chamber for Sewerage Network Zone 2 |  | 2026-10-28 → 2026-11-04 (+7d) | 100.1d → 93.1d |
| MOD-SWN-PW-1035 | Test Water Drain Chamber for Sewerage Network Zone 2 | 2026-10-28 → 2026-11-04 (+7d) | 2026-11-12 → 2026-11-19 (+7d) | 111.6d → 104.6d |
| MOD-SWN-PW-1005 | Backfilling Water Drain Chamber for Sewerage Network Zone 2 | 2026-11-12 → 2026-11-19 (+7d) | 2026-11-27 → 2026-12-04 (+7d) | 111.6d → 104.6d |
| 3 | **Discharge Chambers Construction** |  | 2026-12-03 → 2026-12-10 (+7d) |  |
| MOD-SWN-PW-1055 | Excavation Discharge Chamber for Sewerage Network Zone 2 |  | 2026-10-11 → 2026-10-18 (+7d) | 106.3d → 99.3d |
| MOD-SWN-PW-1065 | Lean Concrete / Bedding Discharge Chamber for Sewerage Network Zone 2 |  | 2026-10-21 → 2026-10-28 (+7d) | 106.3d → 99.3d |
| MOD-SWN-VF-144 | Discharge Chambers Construction Discharge Chamber for Sewerage Network Zone 2 |  | 2026-11-03 → 2026-11-10 (+7d) | 100.1d → 93.1d |
| MOD-SWN-PW-1075 | Test Discharge Chamber for Sewerage Network Zone 2 | 2026-11-03 → 2026-11-10 (+7d) | 2026-11-18 → 2026-11-25 (+7d) | 105.1d → 98.1d |
| MOD-SWN-PW-1045 | Backfilling Discharge Chamber for Sewerage Network Zone 2 | 2026-11-18 → 2026-11-25 (+7d) | 2026-12-03 → 2026-12-10 (+7d) | 105.1d → 98.1d |
| 4 | **Flow Meter Chambers Construction** |  | 2026-12-08 → 2026-12-15 (+7d) |  |
| MOD-SWN-PW-1095 | Excavation Flow Meter Chamber for Sewerage Network Zone 2 |  | 2026-10-11 → 2026-10-18 (+7d) | 110.7d → 103.7d |
| MOD-SWN-PW-1105 | Lean Concrete / Bedding Flow Meter Chamber for Sewerage Network Zone 2 |  | 2026-10-23 → 2026-10-30 (+7d) | 110.7d → 103.7d |
| MOD-SWN-VF-154 | Flow Meter Chambers Construction Flow Meter Chamber for Sewerage Network Zone 2 | 2026-11-03 → 2026-11-10 (+7d) | 2026-11-08 → 2026-11-15 (+7d) | 100.1d → 93.1d |
| MOD-SWN-PW-1115 | Test Flow Meter Chamber for Sewerage Network Zone 2 | 2026-11-08 → 2026-11-15 (+7d) | 2026-11-23 → 2026-11-30 (+7d) | 100.1d → 93.1d |
| MOD-SWN-PW-1085 | Backfilling Flow Meter Chamber for Sewerage Network Zone 2 | 2026-11-23 → 2026-11-30 (+7d) | 2026-12-08 → 2026-12-15 (+7d) | 100.1d → 93.1d |
| 4 | **Manholes** |  | 2026-11-14 → 2026-11-21 (+7d) |  |
| 1 | **1200mm GRP Manholes with Backdrop** |  | 2026-11-08 → 2026-11-15 (+7d) |  |
| MOD-SWN-PW-1455 | Excavation 1.2m GRP for Sewerage Network Zone 2 |  | 2026-10-04 → 2026-10-11 (+7d) | 124.49d → 117.49d |
| MOD-SWN-PW-1465 | Lean Concrete / Bedding 1.2m GRP for Sewerage Network Zone 2 |  | 2026-10-06 → 2026-10-13 (+7d) | 124.49d → 117.49d |
| MOD-SWN-MH-145 | 1200mm GRP Manholes with Backdrop 1.2m GRP for Sewerage Network Zone 2 |  | 2026-10-09 → 2026-10-16 (+7d) | 124.49d → 117.49d |
| MOD-SWN-PW-1475 | Test 1.2m GRP for Sewerage Network Zone 2 | 2026-10-09 → 2026-10-16 (+7d) | 2026-10-24 → 2026-10-31 (+7d) | 130.4d → 123.4d |
| MOD-SWN-PW-1445 | Backfilling 1.2m GRP for Sewerage Network Zone 2 | 2026-10-24 → 2026-10-31 (+7d) | 2026-11-08 → 2026-11-15 (+7d) | 130.4d → 123.4d |
| 2 | **1500mm GRP Manholes (Standard & Backdrop)** |  | 2026-11-11 → 2026-11-18 (+7d) |  |
| MOD-SWN-PW-1495 | Excavation 1.5m GRP for Sewerage Network Zone 2 |  | 2026-10-05 → 2026-10-12 (+7d) | 126.17d → 119.17d |
| MOD-SWN-PW-1505 | Lean Concrete / Bedding 1.5m GRP for Sewerage Network Zone 2 |  | 2026-10-07 → 2026-10-14 (+7d) | 126.17d → 119.17d |
| MOD-SWN-MH-155 | 1500mm GRP Manholes (Standard & Backdrop) 1.5m GRP for Sewerage Network Zone 2 |  | 2026-10-12 → 2026-10-19 (+7d) | 124.49d → 117.49d |
| MOD-SWN-PW-1515 | Test 1.5m GRP for Sewerage Network Zone 2 | 2026-10-12 → 2026-10-19 (+7d) | 2026-10-27 → 2026-11-03 (+7d) | 127.25d → 120.25d |
| MOD-SWN-PW-1485 | Backfilling 1.5m GRP for Sewerage Network Zone 2 | 2026-10-27 → 2026-11-03 (+7d) | 2026-11-11 → 2026-11-18 (+7d) | 127.25d → 120.25d |
| 3 | **1800mm GRP Manholes (Standard & Backdrop)** |  | 2026-11-13 → 2026-11-20 (+7d) |  |
| MOD-SWN-PW-1535 | Excavation 1.8m GRP for Sewerage Network Zone 2 |  | 2026-10-04 → 2026-10-11 (+7d) | 130.16d → 123.16d |
| MOD-SWN-PW-1545 | Lean Concrete / Bedding 1.8m GRP for Sewerage Network Zone 2 |  | 2026-10-06 → 2026-10-13 (+7d) | 130.16d → 123.16d |
| MOD-SWN-MH-165 | 1800mm GRP Manholes (Standard & Backdrop) 1.8m GRP for Sewerage Network Zone 2 |  | 2026-10-14 → 2026-10-21 (+7d) | 124.49d → 117.49d |
| MOD-SWN-PW-1555 | Test 1.8m GRP for Sewerage Network Zone 2 | 2026-10-14 → 2026-10-21 (+7d) | 2026-10-29 → 2026-11-05 (+7d) | 125.21d → 118.21d |
| MOD-SWN-PW-1525 | Backfilling 1.8m GRP for Sewerage Network Zone 2 | 2026-10-29 → 2026-11-05 (+7d) | 2026-11-13 → 2026-11-20 (+7d) | 125.21d → 118.21d |
| 4 | **2000mm GRP Manholes (Standard & Backdrop)** |  | 2026-11-14 → 2026-11-21 (+7d) |  |
| MOD-SWN-PW-1575 | Excavation 2m GRP for Sewerage Network Zone 2 |  | 2026-10-04 → 2026-10-11 (+7d) | 132.41d → 125.41d |
| MOD-SWN-PW-1585 | Lean Concrete / Bedding 2m GRP for Sewerage Network Zone 2 |  | 2026-10-06 → 2026-10-13 (+7d) | 132.41d → 125.41d |
| MOD-SWN-MH-175 | 2000mm GRP Manholes (Standard & Backdrop) 2m GRP for Sewerage Network Zone 2 |  | 2026-10-15 → 2026-10-22 (+7d) | 124.49d → 117.49d |
| MOD-SWN-PW-1595 | Test 2m GRP for Sewerage Network Zone 2 | 2026-10-15 → 2026-10-22 (+7d) | 2026-10-30 → 2026-11-06 (+7d) | 124.49d → 117.49d |
| MOD-SWN-PW-1565 | Backfilling 2m GRP for Sewerage Network Zone 2 | 2026-10-30 → 2026-11-06 (+7d) | 2026-11-14 → 2026-11-21 (+7d) | 124.49d → 117.49d |
| 6 | **Rainwater Drainage Network Zone 2** |  | 2026-11-10 → 2026-11-17 (+7d) |  |
| 1 | **Pipe Laying Works** |  | 2026-10-07 → 2026-10-14 (+7d) |  |
| 2 | **Supply & Installation of uPVC Pipes (250–300mm dia)** |  | 2026-10-04 → 2026-10-11 (+7d) |  |
| MOD-RWN-PL-753 | Laying of uPVC pipe UPVC for Rainwater Drainage Network Zone 2 |  | 2026-10-03 → 2026-10-10 (+7d) | -72.3d → -79.3d |
| MOD-RWN-PL-763 | Coating / Wrapping UPVC for Rainwater Drainage Network Zone 2 |  | 2026-10-03 → 2026-10-10 (+7d) | -68.6d → -75.6d |
| MOD-RWN-PL-773 | Test (Pressure-slope) UPVC for Rainwater Drainage Network Zone 2 |  | 2026-10-03 → 2026-10-10 (+7d) | -72.3d → -79.3d |
| MOD-RWN-PL-783 | Backfilling & Warning Tape UPVC for Rainwater Drainage Network Zone 2 |  | 2026-10-04 → 2026-10-11 (+7d) | -69.84d → -76.84d |
| 4 | **uPVC Connection Pipes (150mm dia)** |  | 2026-10-07 → 2026-10-14 (+7d) |  |

| ID | Task | Start | Finish | Total float |
| --- | --- | --- | --- | --- |
| MOD-RWN-PL-853 | Lean Concrete / bedding material UPVC Con. for Rainwater Drainage Network Zone 2 |  | 2026-10-03 → 2026-10-10 (+7d) | -72.26d → -79.26d |
| MOD-RWN-PL-863 | Lay & connect UPVC Con. for Rainwater Drainage Network Zone 2 |  | 2026-10-03 → 2026-10-10 (+7d) | -72.3d → -79.3d |
| MOD-RWN-PL-873 | Test (Pressure-slope) UPVC Con. for Rainwater Drainage Network Zone 2 |  | 2026-10-03 → 2026-10-10 (+7d) | -72.3d → -79.3d |
| MOD-RWN-PL-883 | Backfilling & compaction UPVC Con. for Rainwater Drainage Network Zone 2 |  | 2026-10-07 → 2026-10-14 (+7d) | -72.3d → -79.3d |
| MOD-RWN-PL-903 | Coating / Wrapping UPVC Con. for Rainwater Drainage Network Zone 2 |  | 2026-10-07 → 2026-10-14 (+7d) | -72.3d → -79.3d |
| 5 | **Precast Concrete Box Culverts** |  | 2026-11-09 → 2026-11-16 (+7d) |  |
| 1 | **Box Culverts (500x500mm to 3500x800mm)** |  | 2026-11-09 → 2026-11-16 (+7d) |  |
| MOD-RWN-PC-34 | Excavation to required depth Box culvert for Rainwater Drainage Network Zone 2 |  | 2026-10-04 → 2026-10-11 (+7d) | -90.31d → -96.31d |
| MOD-RWN-PC-44 | Dewatering and trench shoring Box culvert for Rainwater Drainage Network Zone 2 |  | 2026-10-06 → 2026-10-13 (+7d) | -90.31d → -96.31d |
| MOD-RWN-PC-54 | Bedding preparation (gravel/lean concrete) Box culvert for Rainwater Drainage Network Zone 2 |  | 2026-10-10 → 2026-10-17 (+7d) | -90.31d → -96.31d |
| MOD-RWN-PC-64 | Installation of box culvert units Box culvert for Rainwater Drainage Network Zone 2 | 2026-10-10 → 2026-10-17 (+7d) | 2026-10-15 → 2026-10-22 (+7d) | -90.31d → -96.31d |
| MOD-RWN-PC-74 | Alignment and joint sealing Box culvert for Rainwater Drainage Network Zone 2 | 2026-10-15 → 2026-10-22 (+7d) | 2026-10-20 → 2026-10-27 (+7d) | -89.61d → -95.61d |
| MOD-RWN-PC-84 | Construct headwalls/wing walls (if needed) Box culvert for Rainwater Drainage Network Zone 2 | 2026-10-20 → 2026-10-27 (+7d) | 2026-10-28 → 2026-11-04 (+7d) | -89.61d → -95.61d |
| MOD-RWN-PC-94 | Backfilling and compaction Box culvert for Rainwater Drainage Network Zone 2 | 2026-10-28 → 2026-11-04 (+7d) | 2026-11-04 → 2026-11-11 (+7d) | -89.61d → -95.61d |
| MOD-RWN-PC-104 | Surface finishing Box culvert for Rainwater Drainage Network Zone 2 | 2026-11-05 → 2026-11-12 (+7d) | 2026-11-09 → 2026-11-16 (+7d) | -89.61d → -95.61d |
| 2 | **Tube Culverts at Road Intersections** |  | 2026-10-10 → 2026-10-17 (+7d) |  |
| MOD-RWN-PC-124 | Trench excavation under road Tube culvert for Rainwater Drainage Network Zone 2 |  | 2026-10-10 → 2026-10-17 (+7d) | -63.51d → -69.51d |
| 3 | **Box Culverts at Road Intersections** |  | 2026-11-03 → 2026-11-10 (+7d) |  |
| MOD-RWN-PC-184 | Place bedding material for Rainwater Drainage Network Zone 2 |  | 2026-10-04 → 2026-10-11 (+7d) | -84.96d → -90.96d |
| MOD-RWN-PC-194 | Install precast box culvert for Rainwater Drainage Network Zone 2 | 2026-10-05 → 2026-10-12 (+7d) | 2026-10-08 → 2026-10-15 (+7d) | -84.96d → -90.96d |
| MOD-RWN-PC-204 | Construct connection chambers (if needed) for Rainwater Drainage Network Zone 2 | 2026-10-10 → 2026-10-17 (+7d) | 2026-10-10 → 2026-10-17 (+7d) | -84.96d → -90.96d |
| MOD-RWN-PC-214 | Joint treatment and testing for Rainwater Drainage Network Zone 2 | 2026-10-11 → 2026-10-18 (+7d) | 2026-10-24 → 2026-10-31 (+7d) | -84.96d → -90.96d |
| MOD-RWN-PC-224 | Backfilling and surface reinstatement for Rainwater Drainage Network Zone 2 | 2026-10-25 → 2026-11-01 (+7d) | 2026-11-03 → 2026-11-10 (+7d) | -84.96d → -90.96d |
| 4 | **Manholes** |  | 2026-11-10 → 2026-11-17 (+7d) |  |
| 1 | **Circular GRP Manholes (1200–1800mm dia)** |  | 2026-10-22 → 2026-10-29 (+7d) |  |
| MOD-RWN-MH-34 | Dewatering and safety barriers Circular Manhole for Rainwater Drainage Network Zone 2 |  | 2026-10-11 → 2026-10-18 (+7d) | -74.66d → -80.66d |
| MOD-RWN-MH-44 | Concrete base construction Circular Manhole for Rainwater Drainage Network Zone 2 |  | 2026-10-12 → 2026-10-19 (+7d) | -74.66d → -80.66d |
| MOD-RWN-MH-54 | Install GRP manhole shaft sections Circular Manhole for Rainwater Drainage Network Zone 2 |  | 2026-10-14 → 2026-10-21 (+7d) | -74.66d → -80.66d |
| MOD-RWN-MH-64 | Place slab and cover frame Circular Manhole for Rainwater Drainage Network Zone 2 |  | 2026-10-17 → 2026-10-24 (+7d) | -74.66d → -80.66d |
| MOD-RWN-MH-74 | Waterproofing Circular Manhole for Rainwater Drainage Network Zone 2 | 2026-10-17 → 2026-10-24 (+7d) | 2026-10-19 → 2026-10-26 (+7d) | -74.66d → -80.66d |
| MOD-RWN-MH-84 | Backfilling and compaction Circular Manhole for Rainwater Drainage Network Zone 2 | 2026-10-20 → 2026-10-27 (+7d) | 2026-10-22 → 2026-10-29 (+7d) | -74.66d → -80.66d |
| 3 | **Concrete Manholes for 1500x1500 Box Pipes** |  | 2026-10-25 → 2026-11-01 (+7d) |  |
| MOD-RWN-MH-174 | Base slab and wall shuttering Concrete Manhole 1.5x1.5 for Rainwater Drainage Network Zone 2 |  | 2026-10-11 → 2026-10-18 (+7d) | -76.66d → -82.66d |
| MOD-RWN-MH-184 | Wall reinforcement and casting Concrete Manhole 1.5x1.5 for Rainwater Drainage Network Zone 2 |  | 2026-10-14 → 2026-10-21 (+7d) | -76.66d → -82.66d |
| MOD-RWN-MH-194 | Roof slab with openings Concrete Manhole 1.5x1.5 for Rainwater Drainage Network Zone 2 |  | 2026-10-17 → 2026-10-24 (+7d) | -76.66d → -82.66d |
| MOD-RWN-MH-204 | Masonry/benching works inside Concrete Manhole 1.5x1.5 for Rainwater Drainage Network Zone 2 | 2026-10-17 → 2026-10-24 (+7d) | 2026-10-19 → 2026-10-26 (+7d) | -76.66d → -82.66d |
| MOD-RWN-MH-214 | Install cover and frame Concrete Manhole 1.5x1.5 for Rainwater Drainage Network Zone 2 | 2026-10-19 → 2026-10-26 (+7d) | 2026-10-21 → 2026-10-28 (+7d) | -76.66d → -82.66d |
| MOD-RWN-MH-224 | Backfill in layers Concrete Manhole 1.5x1.5 for Rainwater Drainage Network Zone 2 | 2026-10-21 → 2026-10-28 (+7d) | 2026-10-25 → 2026-11-01 (+7d) | -76.66d → -82.66d |
| 2 | **Concrete Manholes for 1000x1000 Box Pipes** |  | 2026-11-10 → 2026-11-17 (+7d) |  |
| MOD-RWN-MH-94 | Excavation Concrete Manhole 1x1 for Rainwater Drainage Network Zone 2 |  | 2026-10-12 → 2026-10-19 (+7d) | -90.31d → -96.31d |
| MOD-RWN-MH-104 | Base slab and wall shuttering Concrete Manhole 1x1 for Rainwater Drainage Network Zone 2 | 2026-10-12 → 2026-10-19 (+7d) | 2026-10-14 → 2026-10-21 (+7d) | -90.31d → -96.31d |
| MOD-RWN-MH-114 | Wall reinforcement and casting Concrete Manhole 1x1 for Rainwater Drainage Network Zone 2 | 2026-10-14 → 2026-10-21 (+7d) | 2026-10-20 → 2026-10-27 (+7d) | -90.31d → -96.31d |
| MOD-RWN-MH-124 | Roof slab with openings Concrete Manhole 1x1 for Rainwater Drainage Network Zone 2 | 2026-10-20 → 2026-10-27 (+7d) | 2026-10-27 → 2026-11-03 (+7d) | -90.31d → -96.31d |
| MOD-RWN-MH-134 | Masonry/benching works inside Concrete Manhole 1x1 for Rainwater Drainage Network Zone 2 | 2026-10-27 → 2026-11-03 (+7d) | 2026-11-02 → 2026-11-09 (+7d) | -90.31d → -96.31d |
| MOD-RWN-MH-144 | Install cover and frame Concrete Manhole 1x1 for Rainwater Drainage Network Zone 2 | 2026-11-02 → 2026-11-09 (+7d) | 2026-11-07 → 2026-11-14 (+7d) | -90.31d → -96.31d |
| MOD-RWN-MH-154 | Backfill in layers Concrete Manhole 1x1 for Rainwater Drainage Network Zone 2 | 2026-11-07 → 2026-11-14 (+7d) | 2026-11-10 → 2026-11-17 (+7d) | -90.31d → -96.31d |
| 3 | **Gully Outfalls to Swales** |  | 2026-10-25 → 2026-11-01 (+7d) |  |
| 1 | **Gully Outfalls to Swales** |  | 2026-10-14 → 2026-10-21 (+7d) |  |
| MOD-RWN-GO-21 | Excavate outfall channel Gully Outfall to Swales for Rainwater Drainage Network Zone 2 |  | 2026-10-10 → 2026-10-17 (+7d) | -67.61d → -73.61d |
| MOD-RWN-GO-31 | Place concrete apron or pipes Gully Outfall to Swales for Rainwater Drainage Network Zone 2 |  | 2026-10-11 → 2026-10-18 (+7d) | -67.61d → -73.61d |
| MOD-RWN-GO-41 | Provide slope protection (riprap) Gully Outfall to Swales for Rainwater Drainage Network Zone 2 |  | 2026-10-11 → 2026-10-18 (+7d) | -67.61d → -73.61d |
| MOD-RWN-GO-51 | Compact and shape terrain Gully Outfall to Swales for Rainwater Drainage Network Zone 2 | 2026-10-12 → 2026-10-19 (+7d) | 2026-10-14 → 2026-10-21 (+7d) | -67.61d → -73.61d |
| 2 | **Riprap Works & Protection** |  | 2026-10-25 → 2026-11-01 (+7d) |  |
| MOD-RWN-GO-61 | Lay filter fabric/membrane for Rainwater Drainage Network Zone 2 |  | 2026-10-11 → 2026-10-18 (+7d) | -76.41d → -82.41d |
| MOD-RWN-GO-71 | Place riprap/stone layer for Rainwater Drainage Network Zone 2 |  | 2026-10-15 → 2026-10-22 (+7d) | -76.41d → -82.41d |
| MOD-RWN-GO-81 | Compact edges for Rainwater Drainage Network Zone 2 | 2026-10-15 → 2026-10-22 (+7d) | 2026-10-21 → 2026-10-28 (+7d) | -76.41d → -82.41d |
| MOD-RWN-GO-91 | Ensure hydraulic flow direction for Rainwater Drainage Network Zone 2 | 2026-10-21 → 2026-10-28 (+7d) | 2026-10-25 → 2026-11-01 (+7d) | -76.41d → -82.41d |
| 6 | **Backfilling & Bedding** |  | 2026-10-12 → 2026-10-19 (+7d) |  |
| 2 | **Gravel Bedding & Filter Cloth for uPVC Drain Pipes** |  | 2026-10-12 → 2026-10-19 (+7d) |  |
| MOD-RWN-BB-102 | Final fill and trench restoration for Rainwater Drainage Network Zone 2 |  | 2026-10-12 → 2026-10-19 (+7d) | -65.75d → -71.75d |
| MOD-RWN-BB-62 | Line trench with filter cloth for Rainwater Drainage Network Zone 2 |  | 2026-10-05 → 2026-10-12 (+7d) | -65.75d → -71.75d |
| MOD-RWN-BB-72 | Place and compact gravel bedding for Rainwater Drainage Network Zone 2 |  | 2026-10-05 → 2026-10-12 (+7d) | -65.75d → -71.75d |
| MOD-RWN-BB-82 | Lay pipe within gravel zone for Rainwater Drainage Network Zone 2 |  | 2026-10-07 → 2026-10-14 (+7d) | -65.75d → -71.75d |
| MOD-RWN-BB-92 | Wrap filter cloth above pipe for Rainwater Drainage Network Zone 2 |  | 2026-10-10 → 2026-10-17 (+7d) | -65.75d → -71.75d |
| 1 | **Pipe Installation Works** |  | 2026-10-04 → 2026-10-11 (+7d) |  |
| MOD-PWN-PI-153 | Lean Concrete / Pipe Bedding Preparation for Potable Water Network Zone 2 |  | 2026-10-03 → 2026-10-10 (+7d) | 88d → 81d |
| MOD-PWN-PI-163 | HDPE Pipe Laying (200 mm to 710 mm) for Potable Water Network Zone 2 |  | 2026-10-03 → 2026-10-10 (+7d) | 88d → 81d |
| MOD-PWN-PI-173 | Test (Pressure-slope) for Potable Water Network Zone 2 |  | 2026-10-03 → 2026-10-10 (+7d) | 88d → 81d |
| MOD-PWN-PI-203 | Coating / Wrapping for Potable Water Network Zone 2 |  | 2026-10-04 → 2026-10-11 (+7d) | 88d → 81d |
| MOD-PWN-PI-213 | Backfilling & Warrning Tape for Potable Water Network Zone 2 |  | 2026-10-04 → 2026-10-11 (+7d) | 88d → 81d |

| ID | Task | Start | Finish | Complete | Total float |
| --- | --- | --- | --- | --- | --- |
| 2 | **Valve Installation & Chambers** |  | 2026-10-17 → 2026-10-21 (+4d) |  |  |
| MOD-PWN-VC-37 | Valve Chamber Excavation for Potable Water Network Zone 2 |  | 2026-10-03 → 2026-10-10 (+7d) | 92% → 98% | 48.16d → 50.56d |
| MOD-PWN-VC-47 | RC Slab, Walls, or Precast Chambers for Potable Water Network Zone 2 |  | 2026-10-05 → 2026-10-10 (+5d) | 91% → 95% | 65.09d → 60.41d |
| MOD-PWN-VC-7 | Gate Valves (225–710 mm) for Potable Water Network Zone 2 |  | 2026-10-04 → 2026-10-10 (+6d) | 91% → 95% | 65.48d → 60.8d |
| MOD-PWN-VC-17 | Butterfly Valves (355, 500, 630 mm) for Potable Water Network Zone 2 |  | 2026-10-04 → 2026-10-10 (+6d) | 91% → 95% | 65.48d → 60.8d |
| MOD-PWN-VC-27 | 3-exit (2 x 2.5-inch and 1 x 4-inch) dry vacuum cylinder detachable fire nozzle for Potable Water Network Zone 2 |  | 2026-10-04 → 2026-10-10 (+6d) | 84% → 95% | 65.48d → 60.8d |
| MOD-PWN-VC-57 | Fixing Covers, Gratings, Frames for Potable Water Network Zone 2 | 2026-10-05 → 2026-10-10 (+5d) | 2026-10-12 → 2026-10-17 (+5d) |  | 65.09d → 60.41d |
| MOD-PWN-VC-67 | Tagging & Painting for Potable Water Network Zone 2 | 2026-10-12 → 2026-10-17 (+5d) | 2026-10-17 → 2026-10-21 (+4d) |  | 65.09d → 60.41d |
| MOD-PWN-FM-5 | Chamber Excavation (280 mm, 300 mm, 500 mm, 800 mm) for Potable Water Network Zone 2 |  | 2026-10-05 → 2026-10-11 (+6d) | 83% → 90% | 48.16d → 50.56d |
| MOD-PWN-FM-15 | RC or Precast Chamber Construction for Potable Water Network Zone 2 |  | 2026-10-10 → 2026-10-13 (+3d) | 44% → 60% | 48.16d → 50.56d |
| MOD-PWN-FM-25 | Flowmeter Installation & Pipe Integration for Potable Water Network Zone 2 | 2026-10-29 → 2026-09-06 A (-53d) |  | 0% → 50% |  |
| 4 | **Washout & Air Valve Chambers** |  | 2026-10-12 → 2026-10-17 (+5d) |  |  |
| MOD-PWN-WA-27 | Pipe Work for Potable Water Network Zone 2 |  | 2026-10-05 → 2026-10-11 (+6d) | 85% → 90% | 68.6d → 65d |
| MOD-PWN-WA-37 | Washout (Valve + Outlet) Installation for Potable Water Network Zone 2 |  | 2026-10-07 → 2026-10-12 (+5d) | 80% → 88% | 68.6d → 65d |
| MOD-PWN-WA-47 | Air Valve Rooms (Valve + Outlet) Installation for Potable Water Network Zone 2 |  | 2026-10-08 → 2026-10-13 (+5d) | 70% → 80% | 68.6d → 65d |
| MOD-PWN-WA-57 | Covers, Ladders & Tags for Potable Water Network Zone 2 |  | 2026-10-10 → 2026-10-14 (+4d) | 70% → 80% | 68.6d → 65d |
| MOD-PWN-WA-67 | Backfilling & Final Finishing for Potable Water Network Zone 2 | 2026-10-10 → 2026-10-14 (+4d) | 2026-10-12 → 2026-10-17 (+5d) |  | 68.6d → 65d |
| 2 | **Irrigation Network Zone 2** |  | 2026-11-08 → 2026-11-12 (+4d) |  |  |
| 1 | **Excavation, Pipe Laying & Backfilling** |  | 2026-10-05 → 2026-10-12 (+7d) |  |  |
| MOD-IRN-EB-340 | Lean Concrete / Pipe Bedding with Type B Material for Irrigation Network Zone 2 |  | 2026-10-03 → 2026-10-10 (+7d) |  | 87.2d → 80.2d |
| MOD-IRN-EB-350 | HDPE Pipe Laying (125 mm to 630 mm) for Irrigation Network Zone 2 |  | 2026-10-03 → 2026-10-10 (+7d) |  | 87.2d → 80.2d |
| MOD-IRN-EB-360 | Test (Pressure-slope) for Irrigation Network Zone 2 |  | 2026-10-04 → 2026-10-11 (+7d) |  | 87.2d → 80.2d |
| MOD-IRN-EB-370 | Coating / Wrapping for Irrigation Network Zone 2 |  | 2026-10-04 → 2026-10-11 (+7d) |  | 87.2d → 80.2d |
| MOD-IRN-EB-380 | Backfilling & Warrning Tape for Irrigation Network Zone 2 |  | 2026-10-05 → 2026-10-12 (+7d) |  | 87.2d → 80.2d |
| 2 | **Valves and Appurtenances** |  | 2026-10-07 → 2026-10-12 (+5d) |  |  |
| MOD-IRN-VA-5 | Supply & Installation of Valves (Gate Valve) for Irrigation Network Zone 2 |  | 2026-10-04 → 2026-10-10 (+6d) | 85% → 90% | 66.89d → 64.2d |
| MOD-IRN-VA-15 | Supply & Installation of Valves (Butterfly Valve) for Irrigation Network Zone 2 |  | 2026-10-04 → 2026-10-10 (+6d) | 83% → 90% | 66.89d → 64.2d |
| MOD-IRN-VA-25 | Installation of Flanges, Bolts, Collars, Nuts for Irrigation Network Zone 2 |  | 2026-10-05 → 2026-10-11 (+6d) | 80% → 85% | 66.89d → 64.2d |
| MOD-IRN-VA-35 | Valve Pressure Testing for Irrigation Network Zone 2 |  | 2026-10-06 → 2026-10-12 (+6d) | 50% → 60% | 73.04d → 68.4d |
| MOD-IRN-VA-45 | Support Brackets/Anchor Blocks for Irrigation Network Zone 2 |  | 2026-10-07 → 2026-10-12 (+5d) | 40% → 60% | 73.04d → 68.4d |
| 3 | **Valve Rooms** |  | 2026-10-04 → 2026-10-11 (+7d) |  |  |
| MOD-IRN-VR-67 | Backfilling and Finishing Valve Chamber for Irrigation Network Zone 2 |  | 2026-10-04 → 2026-10-11 (+7d) |  | 75.44d → 70d |
| 4 | **Washout Chambers** |  | 2026-10-05 → 2026-10-11 (+6d) |  |  |
| MOD-IRN-WC-46 | Manhole Frame, Cover & Ladder Fixing Washout Chamber for Irrigation Network Zone 2 |  | 2026-10-05 → 2026-10-10 (+5d) | 75% → 95% | 75.19d → 70.35d |
| MOD-IRN-WC-56 | Backfilling & Reinstatement Washout Chamber for Irrigation Network Zone 2 |  | 2026-10-05 → 2026-10-11 (+6d) |  | 75.19d → 70.35d |
| 6 | **Flow Meter Chambers** |  | 2026-11-08 → 2026-11-12 (+4d) |  |  |
| MOD-IRN-FC-16 | RCC Base & Wall Construction Flow Meter Chamber for Irrigation Network Zone 2 |  | 2026-10-05 → 2026-10-11 (+6d) | 85% → 90% | 66.89d → 64.2d |
| MOD-IRN-FC-26 | Flow Meter Installation (280, 300, 500 mm) Flow Meter Chamber for Irrigation Network Zone 2 |  | 2026-10-31 → 2026-11-05 (+5d) | 82% → 90% | 45.75d → 42.25d |
| MOD-IRN-FC-36 | Integration with Pipework Flow Meter Chamber for Irrigation Network Zone 2 |  | 2026-10-31 → 2026-11-07 (+7d) | 75% → 80% | 45.75d → 42.25d |
| MOD-IRN-FC-46 | Testing & Calibration Flow Meter Chamber for Irrigation Network Zone 2 | 2026-10-31 → 2026-07-22 A (-101d) | 2026-11-04 → 2026-11-09 (+5d) | 0% → 50% | 45.75d → 42.25d |
| MOD-IRN-FC-56 | Cover and Access Arrangement Flow Meter Chamber for Irrigation Network Zone 2 | 2026-11-04 → 2026-11-09 (+5d) | 2026-11-08 → 2026-11-12 (+4d) |  | 45.75d → 42.25d |
| 1 | **Sewerage Network Zone 1** |  | 2027-03-08 → 2027-03-21 (+13d) |  |  |
| 1 | **Pipework: Supply, Installation, and Testing** |  | 2026-10-10 → 2026-10-17 (+7d) |  |  |
| 3 | **HDPE Pressure Pipes Installation (250mm–630mm)** |  | 2026-10-10 → 2026-10-17 (+7d) |  |  |
| MOD-SWN-PW-765 | Excavation and Trenching HDPE for Sewerage Network Zone 1 |  | 2026-10-03 → 2026-10-10 (+7d) |  | 115.1d → 108.1d |
| MOD-SWN-PW-645 | HDPE Pressure Pipes Installation (250mm–630mm) HDPE for Sewerage Network Zone 1 |  | 2026-10-05 → 2026-10-12 (+7d) |  | 115.1d → 108.1d |
| MOD-SWN-PW-795 | Coating / Wrapping HDPE for Sewerage Network Zone 1 |  | 2026-10-06 → 2026-10-13 (+7d) |  | 159.35d → 152.35d |
| MOD-SWN-PW-775 | Lean Concrete / Bedding HDPE for Sewerage Network Zone 1 |  | 2026-10-04 → 2026-10-11 (+7d) |  | 115.1d → 108.1d |
| MOD-SWN-PW-785 | Test (Pressure - Slope) HDPE for Sewerage Network Zone 1 |  | 2026-10-05 → 2026-10-12 (+7d) |  | 159.35d → 152.35d |
| MOD-SWN-PW-755 | Backfilling & Warrning Tape HDPE for Sewerage Network Zone 1 |  | 2026-10-10 → 2026-10-17 (+7d) |  | 159.35d → 152.35d |
| 2 | **Fittings and Valves** | 2026-10-05 → 2026-10-12 (+7d) | 2026-11-05 → 2026-11-12 (+7d) |  |  |
| MOD-SWN-FV-001 | Supply & Installation of HDPE Elbows for Sewerage Network Zone 1 | 2026-10-05 → 2026-10-12 (+7d) | 2026-10-12 → 2026-10-19 (+7d) |  | 99.1d → 93.1d |
| MOD-SWN-FV-002 | Gate Valves Installation for Sewerage Network Zone 1 | 2026-10-12 → 2026-10-19 (+7d) | 2026-10-17 → 2026-10-24 (+7d) |  | 99.1d → 93.1d |
| MOD-SWN-FV-003 | Drain Valves Installation for Sewerage Network Zone 1 | 2026-10-17 → 2026-10-24 (+7d) | 2026-10-21 → 2026-10-28 (+7d) |  | 99.1d → 93.1d |
| MOD-SWN-FV-004 | Air Breather & Air Release Valves Installation for Sewerage Network Zone 1 | 2026-10-21 → 2026-10-28 (+7d) | 2026-11-02 → 2026-11-09 (+7d) |  | 99.1d → 93.1d |
| MOD-SWN-FV-005 | Jointing & Piping Accessories Installation for Sewerage Network Zone 1 | 2026-11-02 → 2026-11-09 (+7d) | 2026-11-05 → 2026-11-12 (+7d) |  | 99.1d → 93.1d |
| 3 | **Valve & Flow Meter Chambers** |  | 2026-12-17 → 2026-12-24 (+7d) |  |  |
| 1 | **Valve Chambers Construction** |  | 2026-11-29 → 2026-12-06 (+7d) |  |  |
| MOD-SWN-PW-1135 | Excavation Valve Chamber for Sewerage Network Zone 1 |  | 2026-10-13 → 2026-10-20 (+7d) |  | 90.7d → 83.7d |
| MOD-SWN-PW-1145 | Lean Concrete / Bedding Valve Chamber for Sewerage Network Zone 1 |  | 2026-10-26 → 2026-11-02 (+7d) |  | 90.7d → 83.7d |
| MOD-SWN-VF-164 | Valve Chambers Construction Valve Chamber for Sewerage Network Zone 1 |  | 2026-10-30 → 2026-11-06 (+7d) |  | 90.7d → 83.7d |
| MOD-SWN-PW-1155 | Test Valve Chamber for Sewerage Network Zone 1 | 2026-10-30 → 2026-11-06 (+7d) | 2026-11-14 → 2026-11-21 (+7d) |  | 109.4d → 102.4d |
| MOD-SWN-PW-1125 | Backfilling Valve Chamber for Sewerage Network Zone 1 | 2026-11-14 → 2026-11-21 (+7d) | 2026-11-29 → 2026-12-06 (+7d) |  | 109.4d → 102.4d |
| 2 | **Water Drain Chambers Construction** |  | 2026-11-27 → 2026-12-04 (+7d) |  |  |
| MOD-SWN-PW-1175 | Excavation Water Drain Chamber for Sewerage Network Zone 1 |  | 2026-10-09 → 2026-10-16 (+7d) |  | 103.3d → 96.3d |
| MOD-SWN-PW-1185 | Lean Concrete / Bedding Water Drain Chamber for Sewerage Network Zone 1 |  | 2026-10-17 → 2026-10-24 (+7d) |  | 103.3d → 96.3d |
| MOD-SWN-VF-174 | Water Drain Chambers Construction Water Drain Chamber for Sewerage Network Zone 1 |  | 2026-11-06 → 2026-11-13 (+7d) |  | 90.7d → 83.7d |
| MOD-SWN-PW-1195 | Test Water Drain Chamber for Sewerage Network Zone 1 |  | 2026-11-12 → 2026-11-19 (+7d) |  | 110.8d → 103.8d |
| MOD-SWN-PW-1165 | Backfilling Water Drain Chamber for Sewerage Network Zone 1 | 2026-11-12 → 2026-11-19 (+7d) | 2026-11-27 → 2026-12-04 (+7d) |  | 110.8d → 103.8d |
| 3 | **Discharge Chambers Construction** |  | 2026-12-15 → 2026-12-22 (+7d) |  |  |

| ID | Task | Start | Finish | Total float |
| --- | --- | --- | --- | --- |
| MOD-SWN-PW-1215 | Excavation Discharge Chamber for Sewerage Network Zone 1 |  | 2026-10-13 → 2026-10-20 (+7d) | 102.5d → 95.5d |
| MOD-SWN-PW-1225 | Lean Concrete / Bedding Discharge Chamber for Sewerage Network Zone 1 |  | 2026-10-26 → 2026-11-02 (+7d) | 102.5d → 95.5d |
| MOD-SWN-VF-184 | Discharge Chambers Construction Discharge Chamber for Sewerage Network Zone 1 |  | 2026-11-15 → 2026-11-22 (+7d) | 90.7d → 83.7d |
| MOD-SWN-PW-1235 | Test Discharge Chamber for Sewerage Network Zone 1 | 2026-11-16 → 2026-11-23 (+7d) | 2026-11-30 → 2026-12-07 (+7d) | 92.7d → 85.7d |
| MOD-SWN-PW-1205 | Backfilling Discharge Chamber for Sewerage Network Zone 1 | 2026-12-01 → 2026-12-08 (+7d) | 2026-12-15 → 2026-12-22 (+7d) | 92.7d → 85.7d |
| 4 | **Flow Meter Chambers Construction** |  | 2026-12-17 → 2026-12-24 (+7d) |  |
| MOD-SWN-PW-1255 | Excavation Flow Meter Chamber for Sewerage Network Zone 1 |  | 2026-10-10 → 2026-10-17 (+7d) | 118.53d → 111.53d |
| MOD-SWN-PW-1265 | Lean Concrete / Bedding Flow Meter Chamber for Sewerage Network Zone 1 |  | 2026-10-19 → 2026-10-26 (+7d) | 118.53d → 111.53d |
| MOD-SWN-VF-194 | Flow Meter Chambers Construction Flow Meter Chamber for Sewerage Network Zone 1 |  | 2026-11-17 → 2026-11-24 (+7d) | 90.7d → 83.7d |
| MOD-SWN-PW-1275 | Test Flow Meter Chamber for Sewerage Network Zone 1 | 2026-11-18 → 2026-11-25 (+7d) | 2026-12-02 → 2026-12-09 (+7d) | 90.7d → 83.7d |
| MOD-SWN-PW-1245 | Backfilling Flow Meter Chamber for Sewerage Network Zone 1 | 2026-12-03 → 2026-12-10 (+7d) | 2026-12-17 → 2026-12-24 (+7d) | 90.7d → 83.7d |
| 4 | **Manholes** |  | 2026-10-24 → 2026-10-31 (+7d) |  |
| 1 | **1200mm GRP Manholes with Backdrop** |  | 2026-10-24 → 2026-10-31 (+7d) |  |
| MOD-SWN-PW-1295 | Excavation 1.2m GRP for Sewerage Network Zone 1 |  | 2026-10-03 → 2026-10-10 (+7d) | 144.82d → 137.82d |
| MOD-SWN-PW-1305 | Lean Concrete / Bedding 1.2m GRP for Sewerage Network Zone 1 |  | 2026-10-03 → 2026-10-10 (+7d) | 144.82d → 137.82d |
| MOD-SWN-MH-105 | 1200mm GRP Manholes with Backdrop 1.2m GRP for Sewerage Network Zone 1 |  | 2026-10-04 → 2026-10-11 (+7d) | 144.82d → 137.82d |
| MOD-SWN-PW-1315 | Test 1.2m GRP for Sewerage Network Zone 1 | 2026-10-04 → 2026-10-11 (+7d) | 2026-10-09 → 2026-10-16 (+7d) | 144.82d → 137.82d |
| MOD-SWN-PW-1285 | Backfilling 1.2m GRP for Sewerage Network Zone 1 | 2026-10-09 → 2026-10-16 (+7d) | 2026-10-24 → 2026-10-31 (+7d) | 144.82d → 137.82d |
| 2 | **1500mm GRP Manholes (Standard & Backdrop)** |  | 2026-10-24 → 2026-10-31 (+7d) |  |
| MOD-SWN-PW-1335 | Excavation 1.5m GRP for Sewerage Network Zone 1 |  | 2026-10-03 → 2026-10-10 (+7d) | 144.82d → 137.82d |
| MOD-SWN-PW-1345 | Lean Concrete / Bedding 1.5m GRP for Sewerage Network Zone 1 |  | 2026-10-03 → 2026-10-10 (+7d) | 144.82d → 137.82d |
| MOD-SWN-MH-115 | 1500mm GRP Manholes (Standard & Backdrop) 1.5m GRP for Sewerage Network Zone 1 |  | 2026-10-04 → 2026-10-11 (+7d) | 144.82d → 137.82d |
| MOD-SWN-PW-1355 | Test 1.5m GRP for Sewerage Network Zone 1 | 2026-10-04 → 2026-10-11 (+7d) | 2026-10-09 → 2026-10-16 (+7d) | 144.82d → 137.82d |
| MOD-SWN-PW-1325 | Backfilling 1.5m GRP for Sewerage Network Zone 1 | 2026-10-09 → 2026-10-16 (+7d) | 2026-10-24 → 2026-10-31 (+7d) | 144.82d → 137.82d |
| 3 | **1800mm GRP Manholes (Standard & Backdrop)** |  | 2026-10-24 → 2026-10-31 (+7d) |  |
| MOD-SWN-PW-1375 | Excavation 1.8m GRP for Sewerage Network Zone 1 |  | 2026-10-03 → 2026-10-10 (+7d) | 144.82d → 137.82d |
| MOD-SWN-PW-1385 | Lean Concrete / Bedding 1.8m GRP for Sewerage Network Zone 1 |  | 2026-10-03 → 2026-10-10 (+7d) | 144.82d → 137.82d |
| MOD-SWN-MH-125 | 1800mm GRP Manholes (Standard & Backdrop) 1.8m GRP for Sewerage Network Zone 1 |  | 2026-10-04 → 2026-10-11 (+7d) | 144.82d → 137.82d |
| MOD-SWN-PW-1395 | Test 1.8m GRP for Sewerage Network Zone 1 | 2026-10-04 → 2026-10-11 (+7d) | 2026-10-09 → 2026-10-16 (+7d) | 145.02d → 138.02d |
| MOD-SWN-PW-1365 | Backfilling 1.8m GRP for Sewerage Network Zone 1 | 2026-10-09 → 2026-10-16 (+7d) | 2026-10-24 → 2026-10-31 (+7d) | 145.02d → 138.02d |
| 4 | **2000mm GRP Manholes (Standard & Backdrop)** |  | 2026-10-24 → 2026-10-31 (+7d) |  |
| MOD-SWN-PW-1415 | Excavation 2m GRP for Sewerage Network Zone 1 |  | 2026-10-03 → 2026-10-10 (+7d) | 144.82d → 137.82d |
| MOD-SWN-PW-1425 | Lean Concrete / Bedding 2m GRP for Sewerage Network Zone 1 |  | 2026-10-03 → 2026-10-10 (+7d) | 144.82d → 137.82d |
| MOD-SWN-MH-135 | 2000mm GRP Manholes (Standard & Backdrop) 2m GRP for Sewerage Network Zone 1 |  | 2026-10-04 → 2026-10-11 (+7d) | 144.82d → 137.82d |
| MOD-SWN-PW-1435 | Test 2m GRP for Sewerage Network Zone 1 | 2026-10-04 → 2026-10-11 (+7d) | 2026-10-09 → 2026-10-16 (+7d) | 144.82d → 137.82d |
| MOD-SWN-PW-1405 | Backfilling 2m GRP for Sewerage Network Zone 1 | 2026-10-09 → 2026-10-16 (+7d) | 2026-10-24 → 2026-10-31 (+7d) | 144.82d → 137.82d |
| 5 | **Pumping Stations** |  | 2027-03-08 → 2027-03-21 (+13d) |  |
| 9 | **Perimeter Walls & Gates** |  | 2026-10-07 → 2026-10-14 (+7d) |  |
| MOD-SWN-PS-049 | Main entrance gates – Each PS for Sewerage Network Zone 1 |  | 2026-10-07 → 2026-10-14 (+7d) | 26.6d → 20.6d |
| MOD-SWN-PS-050 | Personal entrance gate – Each PS for Sewerage Network Zone 1 |  | 2026-10-04 → 2026-10-11 (+7d) | 26.6d → 20.6d |
| 1 | **Sewage Pumps and MCC System** | 2026-10-29 → 2026-11-05 (+7d) | 2026-12-20 → 2026-12-27 (+7d) |  |
| MOD-SWN-PS-002 | Sewage pumps incl. MCC, control panel, flow meters, transducers, switches, GRP piping, testing & installation – PS1 for | 2026-10-29 → 2026-11-05 (+7d) | 2026-11-11 → 2026-11-18 (+7d) | 57.35d → 51.35d |
| MOD-SWN-PS-003 | Sewage pumps (2x86 l/s, 1x325 l/s) incl. MCC – PS1 for Sewerage Network Zone 1 | 2026-11-11 → 2026-11-18 (+7d) | 2026-11-25 → 2026-12-02 (+7d) | 57.35d → 51.35d |
| MOD-SWN-PS-004 | Sewage pumps (2x55 l/s) incl. MCC – PS2 for Sewerage Network Zone 1 | 2026-11-25 → 2026-12-02 (+7d) | 2026-12-20 → 2026-12-27 (+7d) | 57.35d → 51.35d |
| 2 | **Odor Control System** | 2026-11-30 → 2026-12-07 (+7d) | 2026-12-29 → 2027-01-05 (+7d) |  |
| MOD-SWN-PS-0081 | Odor control system – All stations (PS1) for Sewerage Network Zone 1 | 2026-11-30 → 2026-12-07 (+7d) | 2026-12-12 → 2026-12-19 (+7d) | 0.79d → -5.21d |
| MOD-SWN-PS-0082 | Odor control system – All stations (PS2) for Sewerage Network Zone 1 | 2026-12-12 → 2026-12-19 (+7d) | 2026-12-29 → 2027-01-05 (+7d) | 48.79d → 42.79d |
| 3 | **In-Line Booster Stations** | 2026-12-12 → 2026-12-19 (+7d) | 2027-03-08 → 2027-03-21 (+13d) |  |
| MOD-SWN-PS-010 | In-Line Booster Stations - Civil Works for Sewerage Network Zone 1 | 2026-12-12 → 2026-12-19 (+7d) | 2027-01-05 → 2027-01-12 (+7d) | 0.79d → -5.21d |
| MOD-SWN-PS-1164 | In-Line Booster Stations - Mechanical Works for Sewerage Network Zone 1 | 2027-01-05 → 2027-01-12 (+7d) | 2027-01-30 → 2027-02-06 (+7d) | 0.79d → -5.21d |
| MOD-SWN-PS-1174 | In-Line Booster Stations - Electrical Works for Sewerage Network Zone 1 | 2027-01-30 → 2027-02-06 (+7d) | 2027-03-08 → 2027-03-21 (+13d) | 0.79d → -5.21d |
| 7 | **Engine/Motor Control Center Buildings** | 2026-10-03 → 2026-10-10 (+7d) | 2026-10-11 → 2026-10-18 (+7d) |  |
| MOD-SWN-PS-038 | MCC Building – PS1 for Sewerage Network Zone 1 | 2026-10-03 → 2026-10-10 (+7d) | 2026-10-03 → 2026-10-10 (+7d) | 61.6d → 55.6d |
| MOD-SWN-PS-039 | MCC Building – PS2 for Sewerage Network Zone 1 | 2026-10-04 → 2026-10-11 (+7d) | 2026-10-11 → 2026-10-18 (+7d) | 85.6d → 79.6d |
| 4 | **Valves and Fittings (General Supply & Installation)** | 2026-10-29 → 2026-11-05 (+7d) | 2026-11-04 → 2026-11-11 (+7d) |  |
| MOD-SWN-PS-012 | Valves, fittings & accessories – PS1 for Sewerage Network Zone 1 | 2026-10-29 → 2026-11-05 (+7d) | 2026-11-01 → 2026-11-08 (+7d) | 96.35d → 90.35d |
| MOD-SWN-PS-013 | 35mm raked bar SS 316 mesh – PS1 for Sewerage Network Zone 1 | 2026-11-01 → 2026-11-08 (+7d) | 2026-11-02 → 2026-11-09 (+7d) | 96.35d → 90.35d |
| MOD-SWN-PS-014 | Valves, fittings, flow meters – PS2 for Sewerage Network Zone 1 | 2026-11-02 → 2026-11-09 (+7d) | 2026-11-04 → 2026-11-11 (+7d) | 96.35d → 90.35d |
| 5 | **Tank with Canopy** | 2027-01-05 → 2027-01-12 (+7d) | 2027-01-20 → 2027-01-27 (+7d) |  |
| MOD-SWN-PS-019 | Tank with canopy (per specs/drawings) - PS1 for Sewerage Network Zone 1 | 2027-01-05 → 2027-01-12 (+7d) | 2027-01-20 → 2027-01-27 (+7d) | 29.79d → 23.79d |
| 6 | **Pump Well and Valve Chambers** | 2026-10-04 → 2026-10-11 (+7d) | 2026-12-14 → 2026-12-21 (+7d) |  |
| MOD-SWN-PS-022 | Pump well & valve chamber structure – PS1 (2 wells, 12m deep) for Sewerage Network Zone 1 | 2026-10-04 → 2026-10-11 (+7d) | 2026-10-18 → 2026-10-25 (+7d) | 61.6d → 55.6d |
| MOD-SWN-PS-023 | Concrete wall (5x5x1m) inside PS1 well for Sewerage Network Zone 1 | 2026-10-19 → 2026-10-26 (+7d) | 2026-10-26 → 2026-11-02 (+7d) | 61.6d → 55.6d |
| MOD-SWN-PS-027 | Pump well & valve chamber structure – PS2 (2 wells, 3m each, 9m depth) for Sewerage Network Zone 1 | 2026-10-19 → 2026-10-26 (+7d) | 2026-11-03 → 2026-11-10 (+7d) | 65.6d → 59.6d |
| MOD-SWN-PS-024 | 35 mm raked bar SS 316 network chamber PS1 for Sewerage Network Zone 1 | 2026-10-27 → 2026-11-03 (+7d) | 2026-10-27 → 2026-11-03 (+7d) | 61.6d → 55.6d |
| MOD-SWN-PS-025 | Valve chamber – PS1 for Sewerage Network Zone 1 | 2026-10-28 → 2026-11-04 (+7d) | 2026-11-03 → 2026-11-10 (+7d) | 61.6d → 55.6d |
| MOD-SWN-PS-026 | Flow meter chamber – PS1 for Sewerage Network Zone 1 | 2026-11-04 → 2026-11-11 (+7d) | 2026-11-08 → 2026-11-15 (+7d) | 61.6d → 55.6d |
| MOD-SWN-PS-028 | Valve chamber – PS2 for Sewerage Network Zone 1 | 2026-11-09 → 2026-11-16 (+7d) | 2026-11-26 → 2026-12-03 (+7d) | 61.6d → 55.6d |
| MOD-SWN-PS-029 | Flow meter chamber – PS2 for Sewerage Network Zone 1 | 2026-11-28 → 2026-12-05 (+7d) | 2026-12-14 → 2026-12-21 (+7d) | 61.6d → 55.6d |
| 8 | **Odor Control System Base/Plinth** | 2026-10-25 → 2026-11-01 (+7d) | 2026-10-31 → 2026-11-07 (+7d) |  |

| ID | Task | Start | Finish | Total float |
| --- | --- | --- | --- | --- |
| MOD-SWN-PS-043 | Concrete plinth below odor control – All PSs for Sewerage Network Zone 1 | 2026-10-25 → 2026-11-01 (+7d) | 2026-10-31 → 2026-11-07 (+7d) | 26.6d → 20.6d |
| 10 | **Lighting Works** |  | 2026-10-29 → 2026-11-05 (+7d) |  |
| MOD-SWN-PS-052 | 250W Flood Light installation – Each PS for Sewerage Network Zone 1 |  | 2026-10-29 → 2026-11-05 (+7d) | 101d → 95d |
| 11 | **Duct Works** | 2026-10-19 → 2026-10-26 (+7d) | 2026-10-26 → 2026-11-02 (+7d) |  |
| MOD-SWN-PS-054 | uPVC duct Track 1 – All PSs for Sewerage Network Zone 1 | 2026-10-19 → 2026-10-26 (+7d) | 2026-10-19 → 2026-10-26 (+7d) | 100.6d → 94.6d |
| MOD-SWN-PS-055 | uPVC duct Track 2 – All PSs for Sewerage Network Zone 1 | 2026-10-20 → 2026-10-27 (+7d) | 2026-10-21 → 2026-10-28 (+7d) | 100.6d → 94.6d |
| MOD-SWN-PS-056 | uPVC duct Track 8 – All PSs for Sewerage Network Zone 1 | 2026-10-22 → 2026-10-29 (+7d) | 2026-10-26 → 2026-11-02 (+7d) | 100.6d → 94.6d |
| 12 | **Grounding Works** | 2026-10-27 → 2026-11-03 (+7d) | 2026-10-29 → 2026-11-05 (+7d) |  |
| MOD-SWN-PS-058 | Grounding pit – Each PS for Sewerage Network Zone 1 | 2026-10-27 → 2026-11-03 (+7d) | 2026-10-27 → 2026-11-03 (+7d) | 100.6d → 94.6d |
| MOD-SWN-PS-059 | 600x600 Cable pull pit – All PSs for Sewerage Network Zone 1 | 2026-10-28 → 2026-11-04 (+7d) | 2026-10-29 → 2026-11-05 (+7d) | 100.6d → 94.6d |
| 13 | **Landscaping / Interlocking Tiles** | 2026-10-05 → 2026-10-12 (+7d) | 2026-10-28 → 2026-11-04 (+7d) |  |
| MOD-SWN-PS-061 | Building perimeter interlock tiles for Sewerage Network Zone 1 | 2026-10-05 → 2026-10-12 (+7d) | 2026-10-24 → 2026-10-31 (+7d) | 26.6d → 20.6d |
| MOD-SWN-PS-062 | Entrance road paving tiles for Sewerage Network Zone 1 | 2026-10-25 → 2026-11-01 (+7d) | 2026-10-28 → 2026-11-04 (+7d) | 101.6d → 95.6d |
| 14 | **Pumping Station Internal Drainage Network** | 2026-10-03 → 2026-10-10 (+7d) | 2026-10-10 → 2026-10-17 (+7d) |  |
| MOD-SWN-PS-064 | Internal surface drainage channels for Sewerage Network Zone 1 | 2026-10-03 → 2026-10-10 (+7d) | 2026-10-10 → 2026-10-17 (+7d) | 117.6d → 111.6d |
| 12 | **Rainwater Drainage Network Zone 1** |  | 2026-11-02 → 2026-11-09 (+7d) |  |
| 1 | **Pipe Laying Works** |  | 2026-10-11 → 2026-10-18 (+7d) |  |
| 2 | **Supply & Installation of uPVC Pipes (250–300mm dia)** |  | 2026-10-06 → 2026-10-13 (+7d) |  |
| MOD-RWN-PL-913 | Excavation to required depth UPVC for Rainwater Drainage Network Zone 1 |  | 2026-10-04 → 2026-10-11 (+7d) | -76.25d → -83.25d |
| MOD-RWN-PL-923 | Lean Concrete / Bedding UPVC for Rainwater Drainage Network Zone 1 |  | 2026-10-04 → 2026-10-11 (+7d) | -76.25d → -83.25d |
| MOD-RWN-PL-933 | Laying of uPVC pipe UPVC for Rainwater Drainage Network Zone 1 |  | 2026-10-05 → 2026-10-12 (+7d) | -76.25d → -83.25d |
| MOD-RWN-PL-953 | Test (Pressure-slope) UPVC for Rainwater Drainage Network Zone 1 |  | 2026-10-05 → 2026-10-12 (+7d) | -76.25d → -83.25d |
| MOD-RWN-PL-943 | Coating / Wrapping UPVC for Rainwater Drainage Network Zone 1 |  | 2026-10-05 → 2026-10-12 (+7d) | -70.81d → -77.81d |
| MOD-RWN-PL-963 | Backfilling & Warning Tape UPVC for Rainwater Drainage Network Zone 1 |  | 2026-10-06 → 2026-10-13 (+7d) | -71.81d → -78.81d |
| 4 | **uPVC Connection Pipes (150mm dia)** |  | 2026-10-11 → 2026-10-18 (+7d) |  |
| MOD-RWN-PL-1043 | Lay & connect UPVC Con. for Rainwater Drainage Network Zone 1 |  | 2026-10-05 → 2026-10-12 (+7d) | -76.25d → -83.25d |
| MOD-RWN-PL-1053 | Test (Pressure-slope) UPVC Con. for Rainwater Drainage Network Zone 1 |  | 2026-10-06 → 2026-10-13 (+7d) | -76.25d → -83.25d |
| MOD-RWN-PL-1083 | Coating / Wrapping UPVC Con. for Rainwater Drainage Network Zone 1 |  | 2026-10-10 → 2026-10-17 (+7d) | -76.25d → -83.25d |
| MOD-RWN-PL-1063 | Backfilling & compaction UPVC Con. for Rainwater Drainage Network Zone 1 |  | 2026-10-11 → 2026-10-18 (+7d) | -76.25d → -83.25d |
| 5 | **Precast Concrete Box Culverts** |  | 2026-11-01 → 2026-11-08 (+7d) |  |
| 1 | **Box Culverts (500x500mm to 3500x800mm)** |  | 2026-10-27 → 2026-11-03 (+7d) |  |
| MOD-RWN-PC-003 | Excavation to required depth Box culvert for Rainwater Drainage Network Zone 1 |  | 2026-10-03 → 2026-10-10 (+7d) | -83.51d → -89.51d |
| MOD-RWN-PC-004 | Dewatering and trench shoring Box culvert for Rainwater Drainage Network Zone 1 |  | 2026-10-04 → 2026-10-11 (+7d) | -83.51d → -89.51d |
| MOD-RWN-PC-005 | Bedding preparation (gravel/lean concrete) Box culvert for Rainwater Drainage Network Zone 1 |  | 2026-10-05 → 2026-10-12 (+7d) | -83.51d → -89.51d |
| MOD-RWN-PC-006 | Installation of box culvert units Box culvert for Rainwater Drainage Network Zone 1 |  | 2026-10-10 → 2026-10-17 (+7d) | -83.51d → -89.51d |
| MOD-RWN-PC-007 | Alignment and joint sealing Box culvert for Rainwater Drainage Network Zone 1 |  | 2026-10-12 → 2026-10-19 (+7d) | -78.31d → -84.31d |
| MOD-RWN-PC-008 | Construct headwalls/wing walls (if needed) Box culvert for Rainwater Drainage Network Zone 1 | 2026-10-12 → 2026-10-19 (+7d) | 2026-10-18 → 2026-10-25 (+7d) | -78.31d → -84.31d |
| MOD-RWN-PC-009 | Backfilling and compaction Box culvert for Rainwater Drainage Network Zone 1 | 2026-10-18 → 2026-10-25 (+7d) | 2026-10-24 → 2026-10-31 (+7d) | -78.31d → -84.31d |
| MOD-RWN-PC-010 | Surface finishing Box culvert for Rainwater Drainage Network Zone 1 | 2026-10-24 → 2026-10-31 (+7d) | 2026-10-27 → 2026-11-03 (+7d) | -78.31d → -84.31d |
| 2 | **Tube Culverts at Road Intersections** |  | 2026-10-21 → 2026-10-28 (+7d) |  |
| MOD-RWN-PC-014 | Pipe bedding and twin pipe alignment Tube culvert for Rainwater Drainage Network Zone 1 |  | 2026-10-06 → 2026-10-13 (+7d) | -73.81d → -79.81d |
| MOD-RWN-PC-015 | Pipe laying and jointing Tube culvert for Rainwater Drainage Network Zone 1 |  | 2026-10-12 → 2026-10-19 (+7d) | -73.81d → -79.81d |
| MOD-RWN-PC-016 | Backfilling and road reinstatement Tube culvert for Rainwater Drainage Network Zone 1 | 2026-10-12 → 2026-10-19 (+7d) | 2026-10-21 → 2026-10-28 (+7d) | -73.81d → -79.81d |
| 3 | **Box Culverts at Road Intersections** |  | 2026-11-01 → 2026-11-08 (+7d) |  |
| MOD-RWN-PC-019 | Deep trench excavation with shoring for Rainwater Drainage Network Zone 1 |  | 2026-10-03 → 2026-10-10 (+7d) | -82.74d → -88.74d |
| MOD-RWN-PC-020 | Place bedding material for Rainwater Drainage Network Zone 1 |  | 2026-10-04 → 2026-10-11 (+7d) | -82.74d → -88.74d |
| MOD-RWN-PC-021 | Install precast box culvert for Rainwater Drainage Network Zone 1 | 2026-10-04 → 2026-10-11 (+7d) | 2026-10-08 → 2026-10-15 (+7d) | -82.74d → -88.74d |
| MOD-RWN-PC-022 | Construct connection chambers (if needed) for Rainwater Drainage Network Zone 1 | 2026-10-08 → 2026-10-15 (+7d) | 2026-10-10 → 2026-10-17 (+7d) | -82.74d → -88.74d |
| MOD-RWN-PC-023 | Joint treatment and testing for Rainwater Drainage Network Zone 1 | 2026-10-10 → 2026-10-17 (+7d) | 2026-10-21 → 2026-10-28 (+7d) | -82.74d → -88.74d |
| MOD-RWN-PC-024 | Backfilling and surface reinstatement for Rainwater Drainage Network Zone 1 | 2026-10-21 → 2026-10-28 (+7d) | 2026-11-01 → 2026-11-08 (+7d) | -82.74d → -88.74d |
| 4 | **Manholes** |  | 2026-11-02 → 2026-11-09 (+7d) |  |
| 1 | **Circular GRP Manholes (1200–1800mm dia)** |  | 2026-10-24 → 2026-10-31 (+7d) |  |
| MOD-RWN-MH-003 | Dewatering and safety barriers Circular Manhole for Rainwater Drainage Network Zone 1 |  | 2026-10-08 → 2026-10-15 (+7d) | -75.16d → -81.16d |
| MOD-RWN-MH-004 | Concrete base construction Circular Manhole for Rainwater Drainage Network Zone 1 |  | 2026-10-10 → 2026-10-17 (+7d) | -75.16d → -81.16d |
| MOD-RWN-MH-005 | Install GRP manhole shaft sections Circular Manhole for Rainwater Drainage Network Zone 1 |  | 2026-10-15 → 2026-10-22 (+7d) | -75.16d → -81.16d |
| MOD-RWN-MH-006 | Place slab and cover frame Circular Manhole for Rainwater Drainage Network Zone 1 |  | 2026-10-18 → 2026-10-25 (+7d) | -75.16d → -81.16d |
| MOD-RWN-MH-007 | Waterproofing Circular Manhole for Rainwater Drainage Network Zone 1 |  | 2026-10-21 → 2026-10-28 (+7d) | -75.16d → -81.16d |
| MOD-RWN-MH-008 | Backfilling and compaction Circular Manhole for Rainwater Drainage Network Zone 1 |  | 2026-10-24 → 2026-10-31 (+7d) | -75.16d → -81.16d |
| 3 | **Concrete Manholes for 1500x1500 Box Pipes** |  | 2026-10-26 → 2026-11-02 (+7d) |  |
| MOD-RWN-MH-019 | Base slab and wall shuttering Concrete Manhole 1.5x1.5 for Rainwater Drainage Network Zone 1 |  | 2026-10-08 → 2026-10-15 (+7d) | -77.86d → -83.86d |
| MOD-RWN-MH-020 | Wall reinforcement and casting Concrete Manhole 1.5x1.5 for Rainwater Drainage Network Zone 1 |  | 2026-10-11 → 2026-10-18 (+7d) | -77.86d → -83.86d |
| MOD-RWN-MH-021 | Roof slab with openings Concrete Manhole 1.5x1.5 for Rainwater Drainage Network Zone 1 |  | 2026-10-12 → 2026-10-19 (+7d) | -77.86d → -83.86d |
| MOD-RWN-MH-022 | Masonry/benching works inside Concrete Manhole 1.5x1.5 for Rainwater Drainage Network Zone 1 |  | 2026-10-14 → 2026-10-21 (+7d) | -77.86d → -83.86d |
| MOD-RWN-MH-023 | Install cover and frame Concrete Manhole 1.5x1.5 for Rainwater Drainage Network Zone 1 |  | 2026-10-20 → 2026-10-27 (+7d) | -77.86d → -83.86d |
| MOD-RWN-MH-024 | Backfill in layers Concrete Manhole 1.5x1.5 for Rainwater Drainage Network Zone 1 | 2026-10-20 → 2026-10-27 (+7d) | 2026-10-26 → 2026-11-02 (+7d) | -77.86d → -83.86d |
| 2 | **Concrete Manholes for 1000x1000 Box Pipes** |  | 2026-11-02 → 2026-11-09 (+7d) |  |
| MOD-RWN-MH-010 | Excavation Concrete Manhole 1x1 for Rainwater Drainage Network Zone 1 |  | 2026-10-08 → 2026-10-15 (+7d) | -83.51d → -89.51d |
| MOD-RWN-MH-011 | Base slab and wall shuttering Concrete Manhole 1x1 for Rainwater Drainage Network Zone 1 |  | 2026-10-10 → 2026-10-17 (+7d) | -83.51d → -89.51d |
| MOD-RWN-MH-012 | Wall reinforcement and casting Concrete Manhole 1x1 for Rainwater Drainage Network Zone 1 |  | 2026-10-13 → 2026-10-20 (+7d) | -83.51d → -89.51d |
| MOD-RWN-MH-013 | Roof slab with openings Concrete Manhole 1x1 for Rainwater Drainage Network Zone 1 |  | 2026-10-18 → 2026-10-25 (+7d) | -83.51d → -89.51d |

| ID | Task | Start | Finish | Complete | Total float |
| --- | --- | --- | --- | --- | --- |
| MOD-RWN-MH-014 | Masonry/benching works inside Concrete Manhole 1x1 for Rainwater Drainage Network Zone 1 |  | 2026-10-25 → 2026-11-01 (+7d) |  | -83.51d → -89.51d |
| MOD-RWN-MH-015 | Install cover and frame Concrete Manhole 1x1 for Rainwater Drainage Network Zone 1 | 2026-10-25 → 2026-11-01 (+7d) | 2026-10-29 → 2026-11-05 (+7d) |  | -83.51d → -89.51d |
| MOD-RWN-MH-016 | Backfill in layers Concrete Manhole 1x1 for Rainwater Drainage Network Zone 1 | 2026-10-29 → 2026-11-05 (+7d) | 2026-11-02 → 2026-11-09 (+7d) |  | -83.51d → -89.51d |
| 2 | **Chambers and Catch Basins** |  | 2026-10-10 → 2026-10-17 (+7d) |  |  |
| 2 | **Rainwater Catch Basins** |  | 2026-10-10 → 2026-10-17 (+7d) |  |  |
| MOD-RWN-CC-012 | Backfill and surface finish Catch Basin for Rainwater Drainage Network Zone 1 |  | 2026-10-10 → 2026-10-17 (+7d) |  | -63.39d → -69.39d |
| 3 | **Gully Outfalls to Swales** |  | 2026-10-13 → 2026-10-20 (+7d) |  |  |
| 1 | **Gully Outfalls to Swales** |  | 2026-10-11 → 2026-10-18 (+7d) |  |  |
| MOD-RWN-GO-004 | Place concrete apron or pipes Gully Outfall to Swales for Rainwater Drainage Network Zone 1 |  | 2026-10-10 → 2026-10-17 (+7d) |  | -64.64d → -70.64d |
| MOD-RWN-GO-005 | Provide slope protection (riprap) Gully Outfall to Swales for Rainwater Drainage Network Zone 1 |  | 2026-10-10 → 2026-10-17 (+7d) |  | -64.64d → -70.64d |
| MOD-RWN-GO-006 | Compact and shape terrain Gully Outfall to Swales for Rainwater Drainage Network Zone 1 |  | 2026-10-11 → 2026-10-18 (+7d) |  | -64.64d → -70.64d |
| 2 | **Riprap Works & Protection** |  | 2026-10-13 → 2026-10-20 (+7d) |  |  |
| MOD-RWN-GO-008 | Lay filter fabric/membrane for Rainwater Drainage Network Zone 1 |  | 2026-10-10 → 2026-10-17 (+7d) |  | -67.03d → -73.03d |
| MOD-RWN-GO-009 | Place riprap/stone layer for Rainwater Drainage Network Zone 1 |  | 2026-10-12 → 2026-10-19 (+7d) |  | -67.03d → -73.03d |
| MOD-RWN-GO-010 | Compact edges for Rainwater Drainage Network Zone 1 |  | 2026-10-13 → 2026-10-20 (+7d) |  | -67.03d → -73.03d |
| 6 | **Backfilling & Bedding** |  | 2026-10-19 → 2026-10-26 (+7d) |  |  |
| 1 | **Backfilling Materials (Type A – 201–700mm Pipes)** |  | 2026-10-13 → 2026-10-20 (+7d) |  |  |
| MOD-RWN-BB-002 | Place granular bedding under pipe for Rainwater Drainage Network Zone 1 |  | 2026-10-03 → 2026-10-10 (+7d) |  | -77.71d → -83.71d |
| MOD-RWN-BB-003 | Lay and align pipe for Rainwater Drainage Network Zone 1 |  | 2026-10-04 → 2026-10-11 (+7d) |  | -66.45d → -72.45d |
| MOD-RWN-BB-004 | Backfill up to spring line for Rainwater Drainage Network Zone 1 |  | 2026-10-04 → 2026-10-11 (+7d) |  | -66.45d → -72.45d |
| MOD-RWN-BB-005 | Compact layer-wise for Rainwater Drainage Network Zone 1 |  | 2026-10-04 → 2026-10-11 (+7d) |  | -66.45d → -72.45d |
| MOD-RWN-BB-006 | Final fill to subgrade level for Rainwater Drainage Network Zone 1 | 2026-10-06 → 2026-10-13 (+7d) | 2026-10-13 → 2026-10-20 (+7d) |  | -66.45d → -72.45d |
| 2 | **Gravel Bedding & Filter Cloth for uPVC Drain Pipes** |  | 2026-10-19 → 2026-10-26 (+7d) |  |  |
| MOD-RWN-BB-008 | Line trench with filter cloth for Rainwater Drainage Network Zone 1 |  | 2026-10-03 → 2026-10-10 (+7d) |  | -72d → -78d |
| MOD-RWN-BB-009 | Place and compact gravel bedding for Rainwater Drainage Network Zone 1 |  | 2026-10-03 → 2026-10-10 (+7d) |  | -72d → -78d |
| MOD-RWN-BB-010 | Lay pipe within gravel zone for Rainwater Drainage Network Zone 1 |  | 2026-10-03 → 2026-10-10 (+7d) |  | -72d → -78d |
| MOD-RWN-BB-011 | Wrap filter cloth above pipe for Rainwater Drainage Network Zone 1 |  | 2026-10-05 → 2026-10-12 (+7d) |  | -72d → -78d |
| MOD-RWN-BB-012 | Final fill and trench restoration for Rainwater Drainage Network Zone 1 | 2026-10-05 → 2026-10-12 (+7d) | 2026-10-19 → 2026-10-26 (+7d) |  | -72d → -78d |
| 13 | **Potable Water Network Zone 1** |  | 2026-11-29 → 2026-11-26 (-3d) |  |  |
| 1 | **Pipe Installation Works** |  | 2026-10-04 → 2026-10-11 (+7d) |  |  |
| MOD-PWN-PI-383 | Lean Concrete / Pipe Bedding Preparation for Potable Water Network Zone 1 |  | 2026-10-03 → 2026-10-10 (+7d) |  | 87.63d → 80.63d |
| MOD-PWN-PI-393 | HDPE Pipe Laying (200 mm to 710 mm) for Potable Water Network Zone 1 |  | 2026-10-03 → 2026-10-10 (+7d) |  | 87.63d → 80.63d |
| MOD-PWN-PI-413 | Coating / Wrapping for Potable Water Network Zone 1 |  | 2026-10-04 → 2026-10-11 (+7d) |  | 87.63d → 80.63d |
| MOD-PWN-PI-403 | Test (Pressure-slope) for Potable Water Network Zone 1 |  | 2026-10-03 → 2026-10-10 (+7d) |  | 87.63d → 80.63d |
| MOD-PWN-PI-423 | Backfilling & Warrning Tape for Potable Water Network Zone 1 |  | 2026-10-04 → 2026-10-11 (+7d) |  | 87.63d → 80.63d |
| 2 | **Valve Installation & Chambers** |  | 2026-10-06 → 2026-10-13 (+7d) |  |  |
| MOD-PWN-VC-004 | Valve Chamber Excavation for Potable Water Network Zone 1 |  | 2026-10-03 → 2026-10-10 (+7d) | 93% → 99% | 46.92d → 49.7d |
| MOD-PWN-VC-005 | RC Slab, Walls, or Precast Chambers for Potable Water Network Zone 1 |  | 2026-10-04 → 2026-10-10 (+6d) | 91% → 95% | 73.41d → 68.17d |
| MOD-PWN-VC-001 | Gate Valves (225–710 mm) for Potable Water Network Zone 1 |  | 2026-10-04 → 2026-10-10 (+6d) | 91% → 95% | 73.52d → 68d |
| MOD-PWN-VC-003 | 3-exit (2 x 2.5-inch and 1 x 4-inch) dry vacuum cylinder detachable fire nozzle for Potable Water Network Zone 1 |  | 2026-10-04 → 2026-10-10 (+6d) | 91% → 95% | 73.52d → 68d |
| MOD-PWN-VC-002 | Butterfly Valves (355, 500, 630 mm) for Potable Water Network Zone 1 |  | 2026-10-04 → 2026-10-10 (+6d) | 91% → 95% | 73.52d → 68d |
| MOD-PWN-VC-006 | Fixing Covers, Gratings, Frames for Potable Water Network Zone 1 |  | 2026-10-04 → 2026-10-11 (+7d) |  | 73.41d → 68d |
| MOD-PWN-VC-007 | Tagging & Painting for Potable Water Network Zone 1 | 2026-10-04 → 2026-10-11 (+7d) | 2026-10-06 → 2026-10-13 (+7d) |  | 73.41d → 68d |
| 3 | **Flow Meter Installation** |  | 2026-11-29 → 2026-11-26 (-3d) |  |  |
| MOD-PWN-FM-002 | RC or Precast Chamber Construction for Potable Water Network Zone 1 |  | 2026-10-07 → 2026-10-13 (+6d) | 44% → 60% | 46.92d → 49.7d |
| MOD-PWN-FM-003 | Flowmeter Installation & Pipe Integration for Potable Water Network Zone 1 | 2026-10-29 → 2026-07-01 A (-120d) | 2026-11-16 → 2026-11-14 (-2d) | 0% → 50% | 28.15d → 29.65d |
| MOD-PWN-FM-004 | Wiring/Cabling if applicable for Potable Water Network Zone 1 | 2026-11-16 → 2026-11-14 (-2d) | 2026-11-25 → 2026-11-23 (-2d) |  | 28.15d → 29.65d |
| MOD-PWN-FM-005 | Calibration & Commissioning for Potable Water Network Zone 1 | 2026-11-25 → 2026-11-23 (-2d) | 2026-11-29 → 2026-11-26 (-3d) |  | 28.15d → 29.65d |
| 4 | **Washout & Air Valve Chambers** |  | 2026-10-13 → 2026-10-18 (+5d) |  |  |
| MOD-PWN-WA-003 | Pipe Work for Potable Water Network Zone 1 |  | 2026-10-04 → 2026-10-11 (+7d) |  | 68.3d → 63.4d |
| MOD-PWN-WA-004 | Washout (Valve + Outlet) Installation for Potable Water Network Zone 1 |  | 2026-10-05 → 2026-10-12 (+7d) |  | 68.3d → 63.4d |
| MOD-PWN-WA-005 | Air Valve Rooms (Valve + Outlet) Installation for Potable Water Network Zone 1 |  | 2026-10-07 → 2026-10-14 (+7d) | 70% → 80% | 68.3d → 63.4d |
| MOD-PWN-WA-006 | Covers, Ladders & Tags for Potable Water Network Zone 1 |  | 2026-10-10 → 2026-10-14 (+4d) | 70% → 80% | 68.3d → 63.4d |
| MOD-PWN-WA-007 | Backfilling & Final Finishing for Potable Water Network Zone 1 | 2026-10-10 → 2026-10-15 (+5d) | 2026-10-13 → 2026-10-18 (+5d) |  | 68.3d → 63.4d |
| 7 | **Irrigation Network Zone 1** |  | 2026-11-09 → 2026-11-11 (+2d) |  |  |
| 1 | **Excavation, Pipe Laying & Backfilling** |  | 2026-10-03 → 2026-10-10 (+7d) |  |  |
| MOD-IRN-EB-400 | Lean Concrete / Pipe Bedding with Type B Material for Irrigation Network Zone 1 |  | 2026-10-03 → 2026-10-10 (+7d) |  | 88.86d → 81.86d |
| MOD-IRN-EB-410 | HDPE Pipe Laying (125 mm to 630 mm) for Irrigation Network Zone 1 |  | 2026-10-03 → 2026-10-10 (+7d) |  | 88.86d → 81.86d |
| MOD-IRN-EB-420 | Test (Pressure-slope) for Irrigation Network Zone 1 |  | 2026-10-03 → 2026-10-10 (+7d) |  | 88.86d → 81.86d |
| MOD-IRN-EB-430 | Coating / Wrapping for Irrigation Network Zone 1 |  | 2026-10-03 → 2026-10-10 (+7d) |  | 88.86d → 81.86d |
| MOD-IRN-EB-440 | Backfilling & Warrning Tape for Irrigation Network Zone 1 |  | 2026-10-03 → 2026-10-10 (+7d) |  | 88.86d → 81.86d |
| 2 | **Valves and Appurtenances** |  | 2026-10-06 → 2026-10-12 (+6d) |  |  |
| MOD-IRN-VA-001 | Supply & Installation of Valves (Gate Valve) for Irrigation Network Zone 1 |  | 2026-10-03 → 2026-10-10 (+7d) | 95% → 97% | 67.35d → 65.55d |
| MOD-IRN-VA-002 | Supply & Installation of Valves (Butterfly Valve) for Irrigation Network Zone 1 |  | 2026-10-03 → 2026-10-10 (+7d) |  | 67.35d → 65.55d |
| MOD-IRN-VA-003 | Installation of Flanges, Bolts, Collars, Nuts for Irrigation Network Zone 1 |  | 2026-10-03 → 2026-10-10 (+7d) | 92% → 93% | 67.35d → 65.55d |
| MOD-IRN-VA-005 | Support Brackets/Anchor Blocks for Irrigation Network Zone 1 |  | 2026-10-06 → 2026-10-12 (+6d) | 40% → 60% | 74.31d → 69.14d |
| MOD-IRN-VA-004 | Valve Pressure Testing for Irrigation Network Zone 1 |  | 2026-10-04 → 2026-10-11 (+7d) | 40% → 60% | 74.31d → 69.14d |
| 3 | **Valve Rooms** |  | 2026-10-07 → 2026-10-13 (+6d) |  |  |
| MOD-IRN-VR-002 | Blinding Concrete Valve Chamber for Irrigation Network Zone 1 |  | 2026-10-03 → 2026-10-10 (+7d) | 95% → 97% | 73.12d → 67.68d |
| MOD-IRN-VR-003 | RCC Base Slab & Chamber Walls Valve Chamber for Irrigation Network Zone 1 |  | 2026-10-04 → 2026-10-11 (+7d) | 85% → 90% | 73.12d → 67.68d |

| ID | Task | Start | Finish | Complete | Total float |
| --- | --- | --- | --- | --- | --- |
| MOD-IRN-VR-004 | Block Wall Construction (if any) Valve Chamber for Irrigation Network Zone 1 |  | 2026-10-05 → 2026-10-11 (+6d) | 79% → 80% | 73.12d → 67.68d |
| MOD-IRN-VR-005 | Installation of Valve inside the Room Valve Chamber for Irrigation Network Zone 1 |  | 2026-10-06 → 2026-10-12 (+6d) | 79% → 80% | 73.12d → 67.68d |
| MOD-IRN-VR-006 | Fixing Frame & Cover Valve Chamber for Irrigation Network Zone 1 |  | 2026-10-06 → 2026-10-13 (+7d) | 75% → 80% | 73.12d → 67.68d |
| MOD-IRN-VR-007 | Backfilling and Finishing Valve Chamber for Irrigation Network Zone 1 |  | 2026-10-07 → 2026-10-13 (+6d) | 50% → 60% | 73.12d → 67.68d |
| 4 | **Washout Chambers** |  | 2026-10-03 → 2026-10-10 (+7d) |  |  |
| MOD-IRN-WC-005 | Manhole Frame, Cover & Ladder Fixing Washout Chamber for Irrigation Network Zone 1 |  | 2026-10-03 → 2026-10-10 (+7d) |  | 76.77d → 70.77d |
| MOD-IRN-WC-006 | Backfilling & Reinstatement Washout Chamber for Irrigation Network Zone 1 |  | 2026-10-03 → 2026-10-10 (+7d) |  | 76.77d → 70.77d |
| 6 | **Flow Meter Chambers** |  | 2026-11-09 → 2026-11-11 (+2d) |  |  |
| MOD-IRN-FC-003 | Flow Meter Installation (280, 300, 500 mm) Flow Meter Chamber for Irrigation Network Zone 1 |  | 2026-11-05 → 2026-11-08 (+3d) | 0% → 70% | 44.55d → 42.75d |
| MOD-IRN-FC-004 | Integration with Pipework Flow Meter Chamber for Irrigation Network Zone 1 |  | 2026-11-05 → 2026-11-08 (+3d) |  | 44.55d → 42.75d |
| MOD-IRN-FC-005 | Testing & Calibration Flow Meter Chamber for Irrigation Network Zone 1 | 2026-11-05 → 2026-11-08 (+3d) | 2026-11-08 → 2026-11-10 (+2d) |  | 44.55d → 42.75d |
| MOD-IRN-FC-006 | Cover and Access Arrangement Flow Meter Chamber for Irrigation Network Zone 1 | 2026-11-08 → 2026-11-10 (+2d) | 2026-11-09 → 2026-11-11 (+2d) |  | 44.55d → 42.75d |
| 3 | **Local Roads** | 2027-04-10 → 2026-08-01 (-252d) | 2027-07-08 → 2027-06-13 (-25d) |  |  |
| 2 | **Precast Curbs (Type K1-D)** | 2027-05-04 → 2026-08-01 (-276d) | 2027-07-08 → 2027-06-13 (-25d) |  |  |
| MOD-LOR-PC-001 | Excavation & Subgrade Preparation for Local Roads | 2027-05-04 → 2026-08-01 A (-276d) | 2027-05-18 → 2027-05-09 (-9d) | 0% → 50% | -64.91d → -42.91d |
| MOD-LOR-PC-002 | Pour concrete base & hunching for Local Roads | 2027-05-18 → 2026-08-11 A (-280d) | 2027-05-27 → 2027-05-18 (-9d) | 0% → 50% | -64.91d → -42.91d |
| MOD-LOR-PC-003 | Install precast curbs for Local Roads | 2027-05-27 → 2026-08-18 A (-282d) | 2027-06-20 → 2027-05-30 (-21d) | 0% → 50% | -64.91d → -42.91d |
| MOD-LOR-PC-004 | Backfill & compact for Local Roads | 2027-06-20 → 2026-09-01 A (-292d) | 2027-06-29 → 2027-06-03 (-26d) | 0% → 50% | -64.91d → -42.91d |
| MOD-LOR-PC-005 | Finishing & Waste Disposal for Local Roads | 2027-06-29 → 2027-06-03 (-26d) | 2027-07-08 → 2027-06-13 (-25d) |  | -64.91d → -42.91d |
| 1 | **Testing & Commissioning** |  | 2027-05-11 → 2027-05-23 (+12d) |  |  |
| 1 | **Zone 3** |  | 2027-05-11 → 2027-05-23 (+12d) |  |  |
| A103610 | Testing and Commissioning for Irrigation Network Zone 3 |  | 2026-12-13 → 2026-12-14 (+1d) | 80% → 88% | 72.75d → 72.55d |
| A103590 | Testing and Commissioning for Rain Water Drainage Network Zone 3 |  | 2026-12-01 → 2026-12-08 (+7d) | 80% → 88% | 82.9d → 76.9d |
| A103600 | Testing and Commissioning for Potable Water Network Zone 3 |  | 2026-11-28 → 2026-11-25 (-3d) | 80% → 88% | 86.15d → 88.35d |
| A102060 | Testing and Commissioning for Sewerage Network Zone 3 |  | 2026-12-20 → 2026-12-27 (+7d) | 80% → 88% | 67.5d → 61.5d |
| A103620 | Testing and Commissioning for Pumping Station Zone 3 | 2027-04-17 → 2027-04-24 (+7d) | 2027-05-11 → 2027-05-23 (+12d) |  | -39.35d → -45.35d |
| 2 | **Zone 2** |  | 2026-12-15 → 2026-12-22 (+7d) |  |  |
| A103670 | Testing and Commissioning for Irrigation Network Zone 2 |  | 2026-11-15 → 2026-11-19 (+4d) |  | 96.65d → 93.15d |
| A103640 | Testing and Commissioning for Sewerage Network Zone 2 |  | 2026-12-15 → 2026-12-22 (+7d) |  | 70.7d → 64.7d |
| A103650 | Testing and Commissioning for Rain Water Drainage Network Zone 2 |  | 2026-11-17 → 2026-11-24 (+7d) |  | 95.05d → 89.05d |
| 3 | **Zone 1** |  | 2027-03-25 → 2027-04-01 (+7d) |  |  |
| A103710 | Testing and Commissioning for Potable Water Network Zone 1 |  | 2026-12-06 → 2026-12-05 (-1d) | 70% → 80% | 79.05d → 80.55d |
| A103700 | Testing and Commissioning for Rain Water Drainage Network Zone 1 |  | 2026-11-09 → 2026-11-16 (+7d) | 70% → 73% | 101.85d → 95.85d |
| A103720 | Testing and Commissioning for Irrigation Network Zone 1 |  | 2026-11-17 → 2026-11-18 (+1d) |  | 95.45d → 93.65d |
| A103690 | Testing and Commissioning for Sewerage Network Zone 1 |  | 2026-12-26 → 2027-01-02 (+7d) |  | 62.3d → 56.3d |
| A103730 | Testing and Commissioning for Pumping Station Zone 1 | 2027-03-08 → 2027-03-21 (+13d) | 2027-03-25 → 2027-04-01 (+7d) |  | 0.79d → -5.21d |
| HO-0001 | Mechanical as-built Submittals & Approval | 2027-05-11 → 2027-05-23 (+12d) | 2027-06-09 → 2027-06-16 (+7d) |  | -39.35d → -45.35d |
| HO-3 | Electrical as-built Submittals & Approval | 2027-05-11 → 2027-05-23 (+12d) | 2027-06-09 → 2027-06-16 (+7d) |  | -18.35d → -24.35d |
| HO-23 | Roadworks as-built Submittals & Approval | 2027-07-08 → 2027-06-13 (-25d) | 2027-08-02 → 2027-07-07 (-26d) |  | -64.91d → -42.91d |
| 3 | **Handover** | 2027-06-09 → 2027-06-16 (+7d) | 2027-07-04 → 2027-07-11 (+7d) |  |  |
| HO-0003 | Handover & Demobilization | 2027-06-09 → 2027-06-16 (+7d) | 2027-07-04 → 2027-07-11 (+7d) |  | -39.35d → -45.35d |

## Version 4 (data date 2026-10-17, saved 2026-10-21, file 38-MOD-2937-B4-Up- 102026.xer)

Last finish stays 2027-10-24.

Changed:

| ID | Task | Start | Finish | Total float |
| --- | --- | --- | --- | --- |
| MIL-0003 | Submission of Report, Work Plan, and Schedule | 2026-10-10 → 2026-10-17 (+7d) | 2026-10-10 → 2026-10-17 (+7d) | 221d → 214d |
| MIL-0004 | Submission and Approval of Drawings and Specifications | 2026-10-15 → 2026-10-22 (+7d) | 2026-10-15 → 2026-10-22 (+7d) | -168d → -175d |
| MIL-0005 | Completion of Water Networks and Tanks | 2026-12-31 → 2027-01-05 (+5d) | 2026-12-31 → 2027-01-05 (+5d) | 0d → -5.5d |
| 2 | **Mobilization** |  | 2026-12-29 → 2027-01-05 (+7d) |  |
| 8 | **Deliverables** |  | 2026-12-29 → 2027-01-05 (+7d) |  |
| 1 | **Submittals** |  | 2026-12-17 → 2026-12-24 (+7d) |  |
| S10002 | Prepare & Submit Method of Statement |  | 2026-10-13 → 2026-10-20 (+7d) | 62.4d → 56.4d |
| S100015 | Prepare & Submit Pre-commissioning/ Commissioning Plan/ Startup/ Testing / Handover Plan | 2026-10-10 → 2026-10-17 (+7d) | 2026-12-17 → 2026-12-24 (+7d) | 1.4d → -4.6d |
| 2 | **Approvals** |  | 2026-12-29 → 2027-01-05 (+7d) |  |
| S100106 | Approval of Method of Statement |  | 2026-10-19 → 2026-10-26 (+7d) | 62.4d → 56.4d |
| S100086 | Approval of Pre-commissioning/ Commissioning Plan/ Startup/ Testing / Handover Plan | 2026-12-19 → 2026-12-26 (+7d) | 2026-12-29 → 2027-01-05 (+7d) | 1.4d → -4.6d |
| 7 | **Engineering** |  | 2026-10-21 → 2026-10-28 (+7d) |  |
| 3 | **Shop Drawing** |  | 2026-10-15 → 2026-10-22 (+7d) |  |
| 2 | **Approvals** |  | 2026-10-15 → 2026-10-22 (+7d) |  |
| A1630 | Landscape details approval |  | 2026-10-15 → 2026-10-22 (+7d) | -117d → -122d |
| 1 | **Material Submittal & Approval** |  | 2026-10-21 → 2026-10-28 (+7d) |  |
| 20 | **Long Lead Items** |  | 2026-10-14 → 2026-10-21 (+7d) |  |
| 13 | **Generators & Fuel Tanks - PS & Control Bldg backup power** |  | 2026-10-14 → 2026-10-21 (+7d) |  |
| A102930 | Material Submittal for Generators & Fuel Tanks - PS & Control Bldg backup power |  | 2026-10-13 → 2026-10-20 (+7d) | -4.21d → -9.21d |
| A102940 | Material Approval for Generators & Fuel Tanks - PS & Control Bldg backup power |  | 2026-10-14 → 2026-10-21 (+7d) | -4.21d → -9.21d |
| 21 | **Short Lead Items** |  | 2026-10-21 → 2026-10-28 (+7d) |  |
| 15 | **Interlock Tiles / Curbstone - Roads, Sidewalks, Landscape** |  | 2026-10-20 → 2026-10-27 (+7d) |  |
| A103180 | Material Approval for Interlock Tiles / Curbstone - Roads, Sidewalks, Landscape |  | 2026-10-20 → 2026-10-27 (+7d) | 24.73d → 19.73d |
| 16 | **Landscaping Materials (Soil, Plants) - Final works, softscape** |  | 2026-10-21 → 2026-10-28 (+7d) |  |
| A103200 | Material Approval for Landscaping Materials (Soil, Plants) - Final works, softscape |  | 2026-10-21 → 2026-10-28 (+7d) | -100.3d → -105.3d |
| 3 | **Procurement** |  | 2027-02-10 → 2027-02-23 (+13d) |  |
| 1 | **Prequalification** |  | 2026-10-14 → 2026-10-21 (+7d) |  |
| 21 | **Short Lead Items** |  | 2026-10-14 → 2026-10-21 (+7d) |  |
| 15 | **Interlock Tiles / Curbstone - Roads, Sidewalks, Landscape** |  | 2026-10-14 → 2026-10-21 (+7d) |  |
| A103560 | Prequalification Approval for Interlock Tiles / Curbstone - Roads, Sidewalks, Landscape |  | 2026-10-14 → 2026-10-21 (+7d) | 29.73d → 23.73d |
| 16 | **Landscaping Materials (Soil, Plants) - Final works, softscape** |  | 2026-10-14 → 2026-10-21 (+7d) |  |
| A103580 | Prequalification Approval for Landscaping Materials (Soil, Plants) - Final works, softscape |  | 2026-10-14 → 2026-10-21 (+7d) | -118.3d → -124.3d |
| 20 | **Long Lead Items** |  | 2026-12-07 → 2026-12-14 (+7d) |  |
| 2 | **Drainage Channel Covers (GRP / DI) - For storm and wastewater** |  | 2026-10-11 → 2026-10-18 (+7d) |  |
| A102570 | Custom Clearance for Drainage Channel Covers (GRP / DI) - For storm and wastewater |  | 2026-10-10 → 2026-10-17 (+7d) | -74.11d → -80.11d |
| A1230 | Manufacturing for Drainage Channel Covers (GRP / DI) - For storm and wastewater |  | 2026-10-10 → 2026-10-17 (+7d) | -74.11d → -80.11d |
| A1240 | Delivery for Drainage Channel Covers (GRP / DI) - For storm and wastewater |  | 2026-10-10 → 2026-10-17 (+7d) | -74.11d → -80.11d |
| A102580 | Staging Time for Drainage Channel Covers (GRP / DI) - For storm and wastewater |  | 2026-10-11 → 2026-10-18 (+7d) | -74.11d → -80.11d |
| 3 | **Control & Instrumentation Devices - Flow meters, pressure sensors** |  | 2026-11-05 → 2026-11-12 (+7d) |  |
| A1530 | Manufacturing for Control & Instrumentation Devices - Flow meters, pressure sensors |  | 2026-10-11 → 2026-10-18 (+7d) | -45.35d → -51.35d |
| A102610 | Custom Clearance for Control & Instrumentation Devices - Flow meters, pressure sensors |  | 2026-10-11 → 2026-10-18 (+7d) | -45.35d → -51.35d |
| A1570 | Delivery for Control & Instrumentation Devices - Flow meters, pressure sensors |  | 2026-10-13 → 2026-10-20 (+7d) | -45.35d → -51.35d |
| A102620 | Staging Time for Control & Instrumentation Devices - Flow meters, pressure sensors |  | 2026-11-05 → 2026-11-12 (+7d) | -45.35d → -51.35d |
| 10 | **Pumps (Sewage, Irrigation, Booster) - Especially for pumping stations** |  | 2026-10-14 → 2026-10-21 (+7d) |  |
| A102150 | Manufacturing for Pumps (Sewage, Irrigation, Booster) - Especially for pumping stations |  | 2026-10-10 → 2026-10-17 (+7d) | 39.3d → 33.3d |
| A102170 | Delivery for Pumps (Sewage, Irrigation, Booster) - Especially for pumping stations |  | 2026-10-12 → 2026-10-19 (+7d) | 39.3d → 33.3d |
| A102630 | Custom Clearance for Pumps (Sewage, Irrigation, Booster) - Especially for pumping stations |  | 2026-10-11 → 2026-10-18 (+7d) | 39.3d → 33.3d |
| A102640 | Staging Time for Pumps (Sewage, Irrigation, Booster) - Especially for pumping stations |  | 2026-10-14 → 2026-10-21 (+7d) | 39.3d → 33.3d |
| 13 | **Generators & Fuel Tanks - PS & Control Bldg backup power** |  | 2026-11-02 → 2026-11-09 (+7d) |  |
| A102230 | Manufacturing for Generators & Fuel Tanks - PS & Control Bldg backup power |  | 2026-10-18 → 2026-10-25 (+7d) | -5.21d → -11.21d |
| A102250 | Delivery for Generators & Fuel Tanks - PS & Control Bldg backup power |  | 2026-10-19 → 2026-10-26 (+7d) | -5.21d → -11.21d |
| A102670 | Custom Clearance for Generators & Fuel Tanks - PS & Control Bldg backup power |  | 2026-10-18 → 2026-10-25 (+7d) | -5.21d → -11.21d |
| A102680 | Staging Time for Generators & Fuel Tanks - PS & Control Bldg backup power |  | 2026-11-02 → 2026-11-09 (+7d) | -5.21d → -11.21d |
| 11 | **Odor Control Units - Sewer PS-specific** |  | 2026-12-07 → 2026-12-14 (+7d) |  |
| A102720 | Staging Time for Odor Control Units - Sewer PS-specific | 2026-11-02 → 2026-11-09 (+7d) | 2026-12-07 → 2026-12-14 (+7d) | -5.21d → -11.21d |
| 21 | **Short Lead Items** |  | 2027-02-10 → 2027-02-23 (+13d) |  |
| 1 | **Asphalt** |  | 2026-12-08 → 2026-12-15 (+7d) |  |
| A102730 | Delivery for Asphalt Phase 1 |  | 2026-12-08 → 2026-12-15 (+7d) | 51.58d → 45.58d |
| A103740 | Delivery for Asphalt Phase 2 |  | 2026-12-08 → 2026-12-15 (+7d) | 51.58d → 45.58d |
| A103750 | Delivery for Asphalt Phase 3 |  | 2026-12-08 → 2026-12-15 (+7d) | 95.66d → 89.66d |
| 15 | **Interlock Tiles / Curbstone - Roads, Sidewalks, Landscape** |  | 2026-11-09 → 2026-11-16 (+7d) |  |
| A102380 | Manufacturing for Interlock Tiles / Curbstone - Roads, Sidewalks, Landscape |  | 2026-10-20 → 2026-10-27 (+7d) | 29.73d → 23.73d |
| A102400 | Delivery for Interlock Tiles / Curbstone - Roads, Sidewalks, Landscape |  | 2026-10-21 → 2026-10-28 (+7d) | 29.73d → 23.73d |
| A102820 | Staging Time for Interlock Tiles / Curbstone - Roads, Sidewalks, Landscape |  | 2026-11-09 → 2026-11-16 (+7d) | 29.73d → 23.73d |
| 16 | **Landscaping Materials (Soil, Plants) - Final works, softscape** | 2026-10-21 → 2026-10-28 (+7d) | 2027-02-10 → 2027-02-23 (+13d) |  |
| A102350 | Issue PO for Landscaping Materials (Soil, Plants) - Final works, softscape | 2026-10-21 → 2026-10-28 (+7d) | 2026-10-26 → 2026-11-02 (+7d) | -119.3d → -125.3d |
| A102360 | Manufacturing for Landscaping Materials (Soil, Plants) - Final works, softscape | 2026-10-26 → 2026-11-02 (+7d) | 2027-01-04 → 2027-01-11 (+7d) | -119.3d → -125.3d |
| A102390 | Delivery for Landscaping Materials (Soil, Plants) - Final works, softscape | 2027-01-04 → 2027-01-11 (+7d) | 2027-02-10 → 2027-02-23 (+13d) | -119.3d → -125.3d |
| 2 | **Sewerage Network Zone 3** |  | 2027-04-24 → 2027-05-01 (+7d) |  |
| 3 | **Pipework: Supply, Installation, and Testing** |  | 2026-11-02 → 2026-11-09 (+7d) |  |

| ID | Task | Start | Finish | Total float |
| --- | --- | --- | --- | --- |
| 3 | **HDPE Pressure Pipes Installation (250mm–630mm)** |  | 2026-11-02 → 2026-11-09 (+7d) |  |
| MOD-SWN-PW-425 | Test (Pressure - Slope) HDPE for Sewerage Network Zone 3 |  | 2026-10-12 → 2026-10-19 (+7d) | 138.8d → 133.38d |
| MOD-SWN-PW-435 | Coating / Wrapping HDPE for Sewerage Network Zone 3 |  | 2026-10-18 → 2026-10-25 (+7d) | 138.8d → 133.38d |
| MOD-SWN-PW-395 | Backfilling & Warrning Tape HDPE for Sewerage Network Zone 3 | 2026-10-19 → 2026-10-26 (+7d) | 2026-11-02 → 2026-11-09 (+7d) | 138.8d → 133.38d |
| 4 | **Fittings and Valves** | 2026-10-10 → 2026-10-17 (+7d) | 2026-11-09 → 2026-11-16 (+7d) |  |
| MOD-SWN-FV-55 | Supply & Installation of HDPE Elbows for Sewerage Network Zone 3 | 2026-10-10 → 2026-10-17 (+7d) | 2026-10-15 → 2026-10-22 (+7d) | 97.4d → 93.08d |
| MOD-SWN-FV-65 | Gate Valves Installation for Sewerage Network Zone 3 | 2026-10-17 → 2026-10-24 (+7d) | 2026-10-20 → 2026-10-27 (+7d) | 97.4d → 93.08d |
| MOD-SWN-FV-75 | Drain Valves Installation for Sewerage Network Zone 3 | 2026-10-21 → 2026-10-28 (+7d) | 2026-10-25 → 2026-11-01 (+7d) | 97.4d → 93.08d |
| MOD-SWN-FV-85 | Air Breather & Air Release Valves Installation for Sewerage Network Zone 3 | 2026-10-26 → 2026-11-02 (+7d) | 2026-11-05 → 2026-11-12 (+7d) | 97.4d → 93.08d |
| MOD-SWN-FV-95 | Jointing & Piping Accessories Installation for Sewerage Network Zone 3 | 2026-11-07 → 2026-11-14 (+7d) | 2026-11-09 → 2026-11-16 (+7d) | 97.4d → 93.08d |
| 6 | **Valve & Flow Meter Chambers** |  | 2026-12-21 → 2026-12-28 (+7d) |  |
| 1 | **Valve Chambers Construction** |  | 2026-11-23 → 2026-11-30 (+7d) |  |
| MOD-SWN-PW-815 | Excavation Valve Chamber for Sewerage Network Zone 3 |  | 2026-10-18 → 2026-10-25 (+7d) | 89.9d → 84.48d |
| MOD-SWN-PW-825 | Lean Concrete / Bedding Valve Chamber for Sewerage Network Zone 3 |  | 2026-10-28 → 2026-11-04 (+7d) | 89.9d → 84.48d |
| MOD-SWN-VF-84 | Valve Chambers Construction Valve Chamber for Sewerage Network Zone 3 |  | 2026-10-31 → 2026-11-07 (+7d) | 89.9d → 84.48d |
| MOD-SWN-PW-835 | Test Valve Chamber for Sewerage Network Zone 3 |  | 2026-11-08 → 2026-11-15 (+7d) | 118.4d → 112.98d |
| MOD-SWN-PW-805 | Backfilling Valve Chamber for Sewerage Network Zone 3 | 2026-11-08 → 2026-11-15 (+7d) | 2026-11-23 → 2026-11-30 (+7d) | 118.4d → 112.98d |
| 2 | **Water Drain Chambers Construction** |  | 2026-12-10 → 2026-12-17 (+7d) |  |
| MOD-SWN-PW-855 | Excavation Water Drain Chamber for Sewerage Network Zone 3 |  | 2026-10-16 → 2026-10-23 (+7d) | 97.1d → 91.68d |
| MOD-SWN-PW-865 | Lean Concrete / Bedding Water Drain Chamber for Sewerage Network Zone 3 |  | 2026-10-24 → 2026-10-31 (+7d) | 97.1d → 91.68d |
| MOD-SWN-VF-94 | Water Drain Chambers Construction Water Drain Chamber for Sewerage Network Zone 3 |  | 2026-11-10 → 2026-11-17 (+7d) | 89.9d → 84.48d |
| MOD-SWN-PW-875 | Test Water Drain Chamber for Sewerage Network Zone 3 | 2026-11-10 → 2026-11-17 (+7d) | 2026-11-25 → 2026-12-02 (+7d) | 101.4d → 95.98d |
| MOD-SWN-PW-845 | Backfilling Water Drain Chamber for Sewerage Network Zone 3 | 2026-11-25 → 2026-12-02 (+7d) | 2026-12-10 → 2026-12-17 (+7d) | 101.4d → 95.98d |
| 3 | **Discharge Chambers Construction** |  | 2026-12-16 → 2026-12-23 (+7d) |  |
| MOD-SWN-PW-895 | Excavation Discharge Chamber for Sewerage Network Zone 3 |  | 2026-10-18 → 2026-10-25 (+7d) | 102.4d → 96.98d |
| MOD-SWN-PW-905 | Lean Concrete / Bedding Discharge Chamber for Sewerage Network Zone 3 |  | 2026-10-28 → 2026-11-04 (+7d) | 102.4d → 96.98d |
| MOD-SWN-VF-104 | Discharge Chambers Construction Discharge Chamber for Sewerage Network Zone 3 |  | 2026-11-16 → 2026-11-23 (+7d) | 89.9d → 84.48d |
| MOD-SWN-PW-915 | Test Discharge Chamber for Sewerage Network Zone 3 | 2026-11-16 → 2026-11-23 (+7d) | 2026-12-01 → 2026-12-08 (+7d) | 94.9d → 89.48d |
| MOD-SWN-PW-885 | Backfilling Discharge Chamber for Sewerage Network Zone 3 | 2026-12-01 → 2026-12-08 (+7d) | 2026-12-16 → 2026-12-23 (+7d) | 94.9d → 89.48d |
| 4 | **Flow Meter Chambers Construction** |  | 2026-12-21 → 2026-12-28 (+7d) |  |
| MOD-SWN-PW-935 | Excavation Flow Meter Chamber for Sewerage Network Zone 3 |  | 2026-10-18 → 2026-10-25 (+7d) | 106.8d → 101.38d |
| MOD-SWN-PW-945 | Lean Concrete / Bedding Flow Meter Chamber for Sewerage Network Zone 3 |  | 2026-10-30 → 2026-11-06 (+7d) | 106.8d → 101.38d |
| MOD-SWN-VF-114 | Flow Meter Chambers Construction Flow Meter Chamber for Sewerage Network Zone 3 | 2026-11-16 → 2026-11-23 (+7d) | 2026-11-21 → 2026-11-28 (+7d) | 89.9d → 84.48d |
| MOD-SWN-PW-955 | Test Flow Meter Chamber for Sewerage Network Zone 3 | 2026-11-21 → 2026-11-28 (+7d) | 2026-12-06 → 2026-12-13 (+7d) | 89.9d → 84.48d |
| MOD-SWN-PW-925 | Backfilling Flow Meter Chamber for Sewerage Network Zone 3 | 2026-12-06 → 2026-12-13 (+7d) | 2026-12-21 → 2026-12-28 (+7d) | 89.9d → 84.48d |
| 7 | **Manholes** |  | 2026-12-04 → 2026-12-11 (+7d) |  |
| 2 | **1500mm GRP Manholes (Standard & Backdrop)** |  | 2026-11-23 → 2026-11-30 (+7d) |  |
| MOD-SWN-PW-1655 | Excavation 1.5m GRP for Sewerage Network Zone 3 |  | 2026-10-12 → 2026-10-19 (+7d) | 107d → 101.58d |
| MOD-SWN-PW-1665 | Lean Concrete / Bedding 1.5m GRP for Sewerage Network Zone 3 |  | 2026-10-18 → 2026-10-25 (+7d) | 107d → 101.58d |
| MOD-SWN-MH-195 | 1500mm GRP Manholes (Standard & Backdrop) 1.5m GRP for Sewerage Network Zone 3 |  | 2026-10-24 → 2026-10-31 (+7d) | 107d → 101.58d |
| MOD-SWN-PW-1675 | Test 1.5m GRP for Sewerage Network Zone 3 | 2026-10-24 → 2026-10-31 (+7d) | 2026-11-08 → 2026-11-15 (+7d) | 118.1d → 112.68d |
| MOD-SWN-PW-1645 | Backfilling 1.5m GRP for Sewerage Network Zone 3 | 2026-11-08 → 2026-11-15 (+7d) | 2026-11-23 → 2026-11-30 (+7d) | 118.1d → 112.68d |
| 3 | **1800mm GRP Manholes (Standard & Backdrop)** |  | 2026-11-28 → 2026-12-05 (+7d) |  |
| MOD-SWN-PW-1695 | Excavation 1.8m GRP for Sewerage Network Zone 3 |  | 2026-10-12 → 2026-10-19 (+7d) | 113.3d → 107.88d |
| MOD-SWN-PW-1705 | Lean Concrete / Bedding 1.8m GRP for Sewerage Network Zone 3 |  | 2026-10-18 → 2026-10-25 (+7d) | 113.3d → 107.88d |
| MOD-SWN-MH-205 | 1800mm GRP Manholes (Standard & Backdrop) 1.8m GRP for Sewerage Network Zone 3 |  | 2026-10-29 → 2026-11-05 (+7d) | 107d → 101.58d |
| MOD-SWN-PW-1715 | Test 1.8m GRP for Sewerage Network Zone 3 | 2026-10-29 → 2026-11-05 (+7d) | 2026-11-13 → 2026-11-20 (+7d) | 113d → 107.58d |
| MOD-SWN-PW-1685 | Backfilling 1.8m GRP for Sewerage Network Zone 3 | 2026-11-13 → 2026-11-20 (+7d) | 2026-11-28 → 2026-12-05 (+7d) | 113d → 107.58d |
| 4 | **2000mm GRP Manholes (Standard & Backdrop)** |  | 2026-12-04 → 2026-12-11 (+7d) |  |
| MOD-SWN-PW-1735 | Excavation 2m GRP for Sewerage Network Zone 3 |  | 2026-10-12 → 2026-10-19 (+7d) | 118.4d → 112.98d |
| MOD-SWN-PW-1745 | Lean Concrete / Bedding 2m GRP for Sewerage Network Zone 3 |  | 2026-10-18 → 2026-10-25 (+7d) | 118.4d → 112.98d |
| MOD-SWN-MH-215 | 2000mm GRP Manholes (Standard & Backdrop) 2m GRP for Sewerage Network Zone 3 | 2026-10-29 → 2026-11-05 (+7d) | 2026-11-04 → 2026-11-11 (+7d) | 107d → 101.58d |
| MOD-SWN-PW-1755 | Test 2m GRP for Sewerage Network Zone 3 | 2026-11-04 → 2026-11-11 (+7d) | 2026-11-19 → 2026-11-26 (+7d) | 107d → 101.58d |
| MOD-SWN-PW-1725 | Backfilling 2m GRP for Sewerage Network Zone 3 | 2026-11-19 → 2026-11-26 (+7d) | 2026-12-04 → 2026-12-11 (+7d) | 107d → 101.58d |
| 5 | **Pumping Stations** |  | 2027-04-24 → 2027-05-01 (+7d) |  |
| 1 | **Sewage Pumps and MCC System** | 2026-11-02 → 2026-11-09 (+7d) | 2026-12-21 → 2026-12-28 (+7d) |  |
| MOD-SWN-PS-644 | Sewage pumps (2x30 l/s, 1x115 l/s) incl. MCC – PS3 for Sewerage Network Zone 3 | 2026-11-02 → 2026-11-09 (+7d) | 2026-11-26 → 2026-12-03 (+7d) | 44.79d → 38.79d |
| MOD-SWN-PS-654 | Sewage pumps (2x100 l/s) incl. MCC – PS4 for Sewerage Network Zone 3 | 2026-11-26 → 2026-12-03 (+7d) | 2026-12-21 → 2026-12-28 (+7d) | 44.79d → 38.79d |
| 3 | **In-Line Booster Stations** | 2026-10-10 → 2026-10-17 (+7d) | 2026-12-21 → 2026-12-28 (+7d) |  |
| MOD-SWN-PS-674 | In-Line Booster Stations - Civil Works for Sewerage Network Zone 3 | 2026-10-10 → 2026-10-17 (+7d) | 2026-11-02 → 2026-11-09 (+7d) | 44.6d → 38.6d |
| MOD-SWN-PS-1144 | In-Line Booster Stations - Mechanical Works for Sewerage Network Zone 3 | 2026-11-03 → 2026-11-10 (+7d) | 2026-11-26 → 2026-12-03 (+7d) | 44.6d → 38.6d |
| MOD-SWN-PS-1154 | In-Line Booster Stations - Electrical Works for Sewerage Network Zone 3 | 2026-11-28 → 2026-12-05 (+7d) | 2026-12-21 → 2026-12-28 (+7d) | 44.6d → 38.6d |
| 7 | **Engine/Motor Control Center Buildings** | 2026-10-10 → 2026-10-17 (+7d) | 2026-10-18 → 2026-10-25 (+7d) |  |
| MOD-SWN-PS-934 | MCC Building – PS3 for Sewerage Network Zone 3 | 2026-10-10 → 2026-10-17 (+7d) | 2026-10-10 → 2026-10-17 (+7d) | -23.1d → -29.1d |
| MOD-SWN-PS-944 | MCC Building – PS4 for Sewerage Network Zone 3 | 2026-10-11 → 2026-10-18 (+7d) | 2026-10-18 → 2026-10-25 (+7d) | 9.3d → 3.3d |
| 4 | **Valves and Fittings (General Supply & Installation)** |  | 2026-11-12 → 2026-11-19 (+7d) |  |
| MOD-SWN-PS-714 | Valves, fittings, flow meters – PS3 for Sewerage Network Zone 3 |  | 2026-11-07 → 2026-11-14 (+7d) | -45.35d → -51.35d |
| MOD-SWN-PS-724 | Valves, fittings, flow meters – PS4 for Sewerage Network Zone 3 |  | 2026-11-10 → 2026-11-17 (+7d) | -45.35d → -51.35d |
| MOD-SWN-PS-734 | 35mm SS 316 mesh network – PS4 for Sewerage Network Zone 3 |  | 2026-11-12 → 2026-11-19 (+7d) | -45.35d → -51.35d |
| 5 | **Tank with Canopy** | 2026-11-12 → 2026-11-19 (+7d) | 2026-11-26 → 2026-12-03 (+7d) |  |

| ID | Task | Start | Finish | Total float |
| --- | --- | --- | --- | --- |
| MOD-SWN-PS-754 | Tank with canopy (per specs/drawings) - PS4 for Sewerage Network Zone 3 | 2026-11-12 → 2026-11-19 (+7d) | 2026-11-26 → 2026-12-03 (+7d) | -45.35d → -51.35d |
| 6 | **Pump Well and Valve Chambers** | 2026-11-26 → 2026-12-03 (+7d) | 2027-03-15 → 2027-03-22 (+7d) |  |
| MOD-SWN-PS-844 | Pump well & valve chamber structure – PS3 (2 wells, 5x5m, 11m depth) for Sewerage Network Zone 3 | 2026-11-26 → 2026-12-03 (+7d) | 2026-12-21 → 2026-12-28 (+7d) | -45.35d → -51.35d |
| MOD-SWN-PS-854 | Concrete wall (5x5x1m) inside PS3 well for Sewerage Network Zone 3 | 2026-12-21 → 2026-12-28 (+7d) | 2026-12-26 → 2027-01-02 (+7d) | 11.95d → 5.95d |
| MOD-SWN-PS-884 | Pump well & valve chamber structure – PS4 (1 well, 4m, 11m depth) for Sewerage Network Zone 3 | 2026-12-21 → 2026-12-28 (+7d) | 2027-01-16 → 2027-01-23 (+7d) | -45.35d → -51.35d |
| MOD-SWN-PS-864 | Valve chamber – PS3 for Sewerage Network Zone 3 | 2026-12-26 → 2027-01-02 (+7d) | 2027-01-18 → 2027-01-25 (+7d) | 11.95d → 5.95d |
| MOD-SWN-PS-894 | Valve chamber – PS4 for Sewerage Network Zone 3 | 2027-01-16 → 2027-01-23 (+7d) | 2027-02-11 → 2027-02-24 (+13d) | -45.35d → -51.35d |
| MOD-SWN-PS-874 | Flow meter chamber – PS3 for Sewerage Network Zone 3 | 2027-01-18 → 2027-01-25 (+7d) | 2027-01-28 → 2027-02-04 (+7d) | 11.95d → 5.95d |
| MOD-SWN-PS-904 | Flow meter chamber – PS4 for Sewerage Network Zone 3 | 2027-02-11 → 2027-02-24 (+13d) | 2027-03-15 → 2027-03-22 (+7d) | -45.35d → -51.35d |
| 8 | **Odor Control System Base/Plinth** | 2027-04-15 → 2027-04-22 (+7d) | 2027-04-22 → 2027-04-29 (+7d) |  |
| MOD-SWN-PS-954 | Concrete plinth below odor control – PS3 & PS4 for Sewerage Network Zone 3 | 2027-04-15 → 2027-04-22 (+7d) | 2027-04-22 → 2027-04-29 (+7d) | -45.35d → -51.35d |
| 10 | **Lighting Works** |  | 2027-04-24 → 2027-05-01 (+7d) |  |
| MOD-SWN-PS-1024 | 250W Flood Light installation – PS3 & PS4 for Sewerage Network Zone 3 |  | 2027-04-24 → 2027-05-01 (+7d) | -45.35d → -51.35d |
| 11 | **Duct Works** | 2027-03-15 → 2027-03-22 (+7d) | 2027-03-23 → 2027-03-30 (+7d) |  |
| MOD-SWN-PS-1034 | uPVC duct Track 1 – PS3 & PS4 for Sewerage Network Zone 3 | 2027-03-15 → 2027-03-22 (+7d) | 2027-03-16 → 2027-03-23 (+7d) | -45.35d → -51.35d |
| MOD-SWN-PS-1044 | uPVC duct Track 2 – PS3 & PS4 for Sewerage Network Zone 3 | 2027-03-16 → 2027-03-23 (+7d) | 2027-03-18 → 2027-03-25 (+7d) | -45.35d → -51.35d |
| MOD-SWN-PS-1054 | uPVC duct Track 8 – PS3 & PS4 for Sewerage Network Zone 3 | 2027-03-18 → 2027-03-25 (+7d) | 2027-03-23 → 2027-03-30 (+7d) | -45.35d → -51.35d |
| 12 | **Grounding Works** | 2027-03-23 → 2027-03-30 (+7d) | 2027-03-27 → 2027-04-03 (+7d) |  |
| MOD-SWN-PS-1064 | Grounding pit – PS3 & PS4 for Sewerage Network Zone 3 | 2027-03-23 → 2027-03-30 (+7d) | 2027-03-24 → 2027-03-31 (+7d) | -45.35d → -51.35d |
| MOD-SWN-PS-1074 | 600x600 Cable pull pit – PS3 & PS4 for Sewerage Network Zone 3 | 2027-03-24 → 2027-03-31 (+7d) | 2027-03-27 → 2027-04-03 (+7d) | -45.35d → -51.35d |
| 13 | **Landscaping / Interlocking Tiles** | 2027-03-27 → 2027-04-03 (+7d) | 2027-04-20 → 2027-04-27 (+7d) |  |
| MOD-SWN-PS-1084 | Building perimeter interlock tiles for Sewerage Network Zone 3 | 2027-03-27 → 2027-04-03 (+7d) | 2027-04-15 → 2027-04-22 (+7d) | -45.35d → -51.35d |
| MOD-SWN-PS-1094 | Entrance road paving tiles for Sewerage Network Zone 3 | 2027-04-15 → 2027-04-22 (+7d) | 2027-04-20 → 2027-04-27 (+7d) | -42.05d → -48.05d |
| 14 | **Pumping Station Internal Drainage Network** | 2027-03-27 → 2027-04-03 (+7d) | 2027-04-04 → 2027-04-11 (+7d) |  |
| MOD-SWN-PS-1104 | Internal surface drainage channels for Sewerage Network Zone 3 | 2027-03-27 → 2027-04-03 (+7d) | 2027-04-04 → 2027-04-11 (+7d) | -28.05d → -34.05d |
| 14 | **Rainwater Drainage Network Zone 3** |  | 2026-12-03 → 2026-12-10 (+7d) |  |
| 1 | **Pipe Laying Works** |  | 2026-11-08 → 2026-11-15 (+7d) |  |
| 2 | **Supply & Installation of uPVC Pipes (250–300mm dia)** |  | 2026-10-16 → 2026-10-23 (+7d) |  |
| MOD-RWN-PL-233 | Excavation to required depth UPVC for Rainwater Drainage Network Zone 3 |  | 2026-10-11 → 2026-10-18 (+7d) | -104.11d → -111.11d |
| MOD-RWN-PL-243 | Lean Concrete / Bedding UPVC for Rainwater Drainage Network Zone 3 |  | 2026-10-11 → 2026-10-18 (+7d) | -104.11d → -111.11d |
| MOD-RWN-PL-253 | Laying of uPVC pipe UPVC for Rainwater Drainage Network Zone 3 |  | 2026-10-12 → 2026-10-19 (+7d) | -104.11d → -111.11d |
| MOD-RWN-PL-283 | Test (Pressure-slope) UPVC for Rainwater Drainage Network Zone 3 |  | 2026-10-12 → 2026-10-19 (+7d) | -104.11d → -111.11d |
| MOD-RWN-PL-263 | Coating / Wrapping UPVC for Rainwater Drainage Network Zone 3 |  | 2026-10-13 → 2026-10-20 (+7d) | -78.31d → -85.31d |
| MOD-RWN-PL-293 | Backfilling & Warning Tape UPVC for Rainwater Drainage Network Zone 3 |  | 2026-10-16 → 2026-10-23 (+7d) | -81.91d → -88.91d |
| 3 | **Supply & Installation of GRP Pipes (350–800mm dia)** |  | 2026-10-30 → 2026-11-06 (+7d) |  |
| MOD-RWN-PL-343 | Test (Pressure-slope) GRP for Rainwater Drainage Network Zone 3 |  | 2026-10-15 → 2026-10-22 (+7d) | -96.06d → -103.06d |
| MOD-RWN-PL-344 | Coating / Wrapping GRP for Rainwater Drainage Network Zone 3 |  | 2026-10-25 → 2026-11-01 (+7d) | -96.06d → -103.06d |
| MOD-RWN-PL-353 | Backfilling & compaction GRP for Rainwater Drainage Network Zone 3 |  | 2026-10-30 → 2026-11-06 (+7d) | -96.06d → -103.06d |
| 4 | **uPVC Connection Pipes (150mm dia)** |  | 2026-11-08 → 2026-11-15 (+7d) |  |
| MOD-RWN-PL-373 | Excavate short trench paths UPVC Con. for Rainwater Drainage Network Zone 3 |  | 2026-10-10 → 2026-10-17 (+7d) | -102.29d → -109.29d |
| MOD-RWN-PL-383 | Lean Concrete / bedding material UPVC Con. for Rainwater Drainage Network Zone 3 |  | 2026-10-10 → 2026-10-17 (+7d) | -102.29d → -109.29d |
| MOD-RWN-PL-393 | Lay & connect UPVC Con. for Rainwater Drainage Network Zone 3 |  | 2026-10-13 → 2026-10-20 (+7d) | -104.11d → -111.11d |
| MOD-RWN-PL-403 | Test (Pressure-slope) UPVC Con. for Rainwater Drainage Network Zone 3 | 2026-10-13 → 2026-10-20 (+7d) | 2026-10-16 → 2026-10-23 (+7d) | -104.11d → -111.11d |
| MOD-RWN-PL-723 | Coating / Wrapping UPVC Con. for Rainwater Drainage Network Zone 3 | 2026-10-16 → 2026-10-23 (+7d) | 2026-11-06 → 2026-11-13 (+7d) | -104.11d → -111.11d |
| MOD-RWN-PL-413 | Backfilling & compaction UPVC Con. for Rainwater Drainage Network Zone 3 | 2026-11-06 → 2026-11-13 (+7d) | 2026-11-08 → 2026-11-15 (+7d) | -104.11d → -111.11d |
| 5 | **Precast Concrete Box Culverts** |  | 2026-12-03 → 2026-12-10 (+7d) |  |
| 1 | **Box Culverts (500x500mm to 3500x800mm)** |  | 2026-12-03 → 2026-12-10 (+7d) |  |
| MOD-RWN-PC-254 | Dewatering and trench shoring Box culvert for Rainwater Drainage Network Zone 3 |  | 2026-10-18 → 2026-10-25 (+7d) | -110.56d → -116.56d |
| MOD-RWN-PC-264 | Bedding preparation (gravel/lean concrete) Box culvert for Rainwater Drainage Network Zone 3 | 2026-10-18 → 2026-10-25 (+7d) | 2026-10-22 → 2026-10-29 (+7d) | -110.56d → -116.56d |
| MOD-RWN-PC-274 | Installation of box culvert units Box culvert for Rainwater Drainage Network Zone 3 | 2026-10-22 → 2026-10-29 (+7d) | 2026-11-03 → 2026-11-10 (+7d) | -110.56d → -116.56d |
| MOD-RWN-PC-284 | Alignment and joint sealing Box culvert for Rainwater Drainage Network Zone 3 | 2026-11-03 → 2026-11-10 (+7d) | 2026-11-08 → 2026-11-15 (+7d) | -110.56d → -116.56d |
| MOD-RWN-PC-294 | Construct headwalls/wing walls (if needed) Box culvert for Rainwater Drainage Network Zone 3 | 2026-11-08 → 2026-11-15 (+7d) | 2026-11-22 → 2026-11-29 (+7d) | -110.56d → -116.56d |
| MOD-RWN-PC-304 | Backfilling and compaction Box culvert for Rainwater Drainage Network Zone 3 | 2026-11-22 → 2026-11-29 (+7d) | 2026-11-30 → 2026-12-07 (+7d) | -110.56d → -116.56d |
| MOD-RWN-PC-314 | Surface finishing Box culvert for Rainwater Drainage Network Zone 3 | 2026-11-30 → 2026-12-07 (+7d) | 2026-12-03 → 2026-12-10 (+7d) | -110.56d → -116.56d |
| 4 | **Manholes** | 2026-10-22 → 2026-10-29 (+7d) | 2026-12-03 → 2026-12-10 (+7d) |  |
| 1 | **Circular GRP Manholes (1200–1800mm dia)** | 2026-10-22 → 2026-10-29 (+7d) | 2026-11-29 → 2026-12-06 (+7d) |  |
| MOD-RWN-MH-234 | Excavate to full manhole depth Circular Manhole for Rainwater Drainage Network Zone 3 | 2026-10-22 → 2026-10-29 (+7d) | 2026-10-31 → 2026-11-07 (+7d) | -106.56d → -112.56d |
| MOD-RWN-MH-244 | Dewatering and safety barriers Circular Manhole for Rainwater Drainage Network Zone 3 | 2026-10-31 → 2026-11-07 (+7d) | 2026-11-07 → 2026-11-14 (+7d) | -106.56d → -112.56d |
| MOD-RWN-MH-254 | Concrete base construction Circular Manhole for Rainwater Drainage Network Zone 3 | 2026-11-07 → 2026-11-14 (+7d) | 2026-11-09 → 2026-11-16 (+7d) | -106.56d → -112.56d |
| MOD-RWN-MH-264 | Install GRP manhole shaft sections Circular Manhole for Rainwater Drainage Network Zone 3 | 2026-11-09 → 2026-11-16 (+7d) | 2026-11-17 → 2026-11-24 (+7d) | -106.56d → -112.56d |
| MOD-RWN-MH-274 | Place slab and cover frame Circular Manhole for Rainwater Drainage Network Zone 3 | 2026-11-17 → 2026-11-24 (+7d) | 2026-11-24 → 2026-12-01 (+7d) | -106.56d → -112.56d |
| MOD-RWN-MH-284 | Waterproofing Circular Manhole for Rainwater Drainage Network Zone 3 | 2026-11-24 → 2026-12-01 (+7d) | 2026-11-26 → 2026-12-03 (+7d) | -106.56d → -112.56d |
| MOD-RWN-MH-294 | Backfilling and compaction Circular Manhole for Rainwater Drainage Network Zone 3 | 2026-11-26 → 2026-12-03 (+7d) | 2026-11-29 → 2026-12-06 (+7d) | -106.56d → -112.56d |
| 3 | **Concrete Manholes for 1500x1500 Box Pipes** | 2026-10-22 → 2026-10-29 (+7d) | 2026-11-29 → 2026-12-06 (+7d) |  |
| MOD-RWN-MH-374 | Excavation Concrete Manhole 1.5x1.5 for Rainwater Drainage Network Zone 3 | 2026-10-22 → 2026-10-29 (+7d) | 2026-10-29 → 2026-11-05 (+7d) | -106.56d → -112.56d |
| MOD-RWN-MH-384 | Base slab and wall shuttering Concrete Manhole 1.5x1.5 for Rainwater Drainage Network Zone 3 | 2026-10-29 → 2026-11-05 (+7d) | 2026-11-03 → 2026-11-10 (+7d) | -106.56d → -112.56d |
| MOD-RWN-MH-394 | Wall reinforcement and casting Concrete Manhole 1.5x1.5 for Rainwater Drainage Network Zone 3 | 2026-11-03 → 2026-11-10 (+7d) | 2026-11-12 → 2026-11-19 (+7d) | -106.56d → -112.56d |
| MOD-RWN-MH-404 | Roof slab with openings Concrete Manhole 1.5x1.5 for Rainwater Drainage Network Zone 3 | 2026-11-12 → 2026-11-19 (+7d) | 2026-11-17 → 2026-11-24 (+7d) | -106.56d → -112.56d |
| MOD-RWN-MH-414 | Masonry/benching works inside Concrete Manhole 1.5x1.5 for Rainwater Drainage Network Zone 3 | 2026-11-17 → 2026-11-24 (+7d) | 2026-11-23 → 2026-11-30 (+7d) | -106.56d → -112.56d |
| MOD-RWN-MH-424 | Install cover and frame Concrete Manhole 1.5x1.5 for Rainwater Drainage Network Zone 3 | 2026-11-23 → 2026-11-30 (+7d) | 2026-11-25 → 2026-12-02 (+7d) | -106.56d → -112.56d |

| ID | Task | Start | Finish | Total float |
| --- | --- | --- | --- | --- |
| MOD-RWN-MH-434 | Backfill in layers Concrete Manhole 1.5x1.5 for Rainwater Drainage Network Zone 3 | 2026-11-25 → 2026-12-02 (+7d) | 2026-11-29 → 2026-12-06 (+7d) | -106.56d → -112.56d |
| 2 | **Concrete Manholes for 1000x1000 Box Pipes** | 2026-10-22 → 2026-10-29 (+7d) | 2026-12-03 → 2026-12-10 (+7d) |  |
| MOD-RWN-MH-304 | Excavation Concrete Manhole 1x1 for Rainwater Drainage Network Zone 3 | 2026-10-22 → 2026-10-29 (+7d) | 2026-10-29 → 2026-11-05 (+7d) | -110.56d → -116.56d |
| MOD-RWN-MH-314 | Base slab and wall shuttering Concrete Manhole 1x1 for Rainwater Drainage Network Zone 3 | 2026-10-29 → 2026-11-05 (+7d) | 2026-11-03 → 2026-11-10 (+7d) | -110.56d → -116.56d |
| MOD-RWN-MH-324 | Wall reinforcement and casting Concrete Manhole 1x1 for Rainwater Drainage Network Zone 3 | 2026-11-03 → 2026-11-10 (+7d) | 2026-11-10 → 2026-11-17 (+7d) | -110.56d → -116.56d |
| MOD-RWN-MH-334 | Roof slab with openings Concrete Manhole 1x1 for Rainwater Drainage Network Zone 3 | 2026-11-10 → 2026-11-17 (+7d) | 2026-11-15 → 2026-11-22 (+7d) | -110.56d → -116.56d |
| MOD-RWN-MH-344 | Masonry/benching works inside Concrete Manhole 1x1 for Rainwater Drainage Network Zone 3 | 2026-11-15 → 2026-11-22 (+7d) | 2026-11-23 → 2026-11-30 (+7d) | -110.56d → -116.56d |
| MOD-RWN-MH-354 | Install cover and frame Concrete Manhole 1x1 for Rainwater Drainage Network Zone 3 | 2026-11-23 → 2026-11-30 (+7d) | 2026-11-28 → 2026-12-05 (+7d) | -110.56d → -116.56d |
| MOD-RWN-MH-364 | Backfill in layers Concrete Manhole 1x1 for Rainwater Drainage Network Zone 3 | 2026-11-28 → 2026-12-05 (+7d) | 2026-12-03 → 2026-12-10 (+7d) | -110.56d → -116.56d |
| 2 | **Chambers and Catch Basins** |  | 2026-10-28 → 2026-11-04 (+7d) |  |
| 1 | **Gully Outfalls** |  | 2026-10-24 → 2026-10-31 (+7d) |  |
| MOD-RWN-CC-198 | Provide slope protection (riprap) Gully Outfall for Rainwater Drainage Network Zone 3 |  | 2026-10-22 → 2026-10-29 (+7d) | -75.72d → -81.72d |
| MOD-RWN-CC-208 | Compact and shape terrain Gully Outfall for Rainwater Drainage Network Zone 3 |  | 2026-10-24 → 2026-10-31 (+7d) | -75.72d → -81.72d |
| 2 | **Rainwater Catch Basins** |  | 2026-10-22 → 2026-10-29 (+7d) |  |
| MOD-RWN-CC-258 | Backfill and surface finish Catch Basin for Rainwater Drainage Network Zone 3 |  | 2026-10-22 → 2026-10-29 (+7d) | -74.68d → -80.68d |
| 3 | **Precast Chambers for Absorption Pits** |  | 2026-10-28 → 2026-11-04 (+7d) |  |
| MOD-RWN-CC-308 | Backfill and compact Absorption Pit for Rainwater Drainage Network Zone 3 | 2026-10-22 → 2026-10-29 (+7d) | 2026-10-28 → 2026-11-04 (+7d) | -79.56d → -85.56d |
| 3 | **Gully Outfalls to Swales** |  | 2026-11-12 → 2026-11-19 (+7d) |  |
| 1 | **Gully Outfalls to Swales** |  | 2026-10-27 → 2026-11-03 (+7d) |  |
| MOD-RWN-GO-111 | Excavate outfall channel Gully Outfall to Swales for Rainwater Drainage Network Zone 3 |  | 2026-10-22 → 2026-10-29 (+7d) | -78.56d → -84.56d |
| MOD-RWN-GO-121 | Place concrete apron or pipes Gully Outfall to Swales for Rainwater Drainage Network Zone 3 |  | 2026-10-24 → 2026-10-31 (+7d) | -78.56d → -84.56d |
| MOD-RWN-GO-131 | Provide slope protection (riprap) Gully Outfall to Swales for Rainwater Drainage Network Zone 3 |  | 2026-10-25 → 2026-11-01 (+7d) | -78.56d → -84.56d |
| MOD-RWN-GO-141 | Compact and shape terrain Gully Outfall to Swales for Rainwater Drainage Network Zone 3 | 2026-10-25 → 2026-11-01 (+7d) | 2026-10-27 → 2026-11-03 (+7d) | -78.56d → -84.56d |
| 2 | **Riprap Works & Protection** | 2026-10-22 → 2026-10-29 (+7d) | 2026-11-12 → 2026-11-19 (+7d) |  |
| MOD-RWN-GO-151 | Lay filter fabric/membrane for Rainwater Drainage Network Zone 3 | 2026-10-22 → 2026-10-29 (+7d) | 2026-10-26 → 2026-11-02 (+7d) | -92.56d → -98.56d |
| MOD-RWN-GO-161 | Place riprap/stone layer for Rainwater Drainage Network Zone 3 | 2026-10-26 → 2026-11-02 (+7d) | 2026-11-07 → 2026-11-14 (+7d) | -92.56d → -98.56d |
| MOD-RWN-GO-171 | Compact edges for Rainwater Drainage Network Zone 3 | 2026-11-07 → 2026-11-14 (+7d) | 2026-11-10 → 2026-11-17 (+7d) | -92.56d → -98.56d |
| MOD-RWN-GO-181 | Ensure hydraulic flow direction for Rainwater Drainage Network Zone 3 | 2026-11-10 → 2026-11-17 (+7d) | 2026-11-12 → 2026-11-19 (+7d) | -92.56d → -98.56d |
| 6 | **Backfilling & Bedding** |  | 2026-11-02 → 2026-11-09 (+7d) |  |
| 1 | **Backfilling Materials (Type A – 201–700mm Pipes)** |  | 2026-10-11 → 2026-10-18 (+7d) |  |
| MOD-RWN-BB-112 | Place granular bedding under pipe for Rainwater Drainage Network Zone 3 |  | 2026-10-10 → 2026-10-17 (+7d) | -64.65d → -70.65d |
| MOD-RWN-BB-122 | Lay and align pipe for Rainwater Drainage Network Zone 3 |  | 2026-10-10 → 2026-10-17 (+7d) | -64.65d → -70.65d |
| MOD-RWN-BB-132 | Backfill up to spring line for Rainwater Drainage Network Zone 3 |  | 2026-10-11 → 2026-10-18 (+7d) | -64.65d → -70.65d |
| MOD-RWN-BB-142 | Compact layer-wise for Rainwater Drainage Network Zone 3 |  | 2026-10-11 → 2026-10-18 (+7d) | -64.65d → -70.65d |
| MOD-RWN-BB-152 | Final fill to subgrade level for Rainwater Drainage Network Zone 3 |  | 2026-10-11 → 2026-10-18 (+7d) | -64.65d → -70.65d |
| 2 | **Gravel Bedding & Filter Cloth for uPVC Drain Pipes** |  | 2026-11-02 → 2026-11-09 (+7d) |  |
| MOD-RWN-BB-162 | Line trench with filter cloth for Rainwater Drainage Network Zone 3 |  | 2026-10-10 → 2026-10-17 (+7d) | -83.56d → -89.56d |
| MOD-RWN-BB-172 | Place and compact gravel bedding for Rainwater Drainage Network Zone 3 |  | 2026-10-11 → 2026-10-18 (+7d) | -83.56d → -89.56d |
| MOD-RWN-BB-182 | Lay pipe within gravel zone for Rainwater Drainage Network Zone 3 |  | 2026-10-13 → 2026-10-20 (+7d) | -83.56d → -89.56d |
| MOD-RWN-BB-192 | Wrap filter cloth above pipe for Rainwater Drainage Network Zone 3 |  | 2026-10-19 → 2026-10-26 (+7d) | -83.56d → -89.56d |
| MOD-RWN-BB-202 | Final fill and trench restoration for Rainwater Drainage Network Zone 3 | 2026-10-19 → 2026-10-26 (+7d) | 2026-11-02 → 2026-11-09 (+7d) | -83.56d → -89.56d |
| 7 | **Deep Basin for Groundwater Collection (2.5–3.0m)** |  | 2026-11-02 → 2026-11-09 (+7d) |  |
| MOD-RWN-DB-002 | Base and side wall construction (cast-in-situ or precast) for Rainwater Drainage Network Zone 3 |  | 2026-10-11 → 2026-10-18 (+7d) | -83.71d → -89.71d |
| MOD-RWN-DB-003 | Pipe connections for inflow for Rainwater Drainage Network Zone 3 |  | 2026-10-13 → 2026-10-20 (+7d) | -83.71d → -89.71d |
| MOD-RWN-DB-004 | Cover slab and access shaft for Rainwater Drainage Network Zone 3 |  | 2026-10-17 → 2026-10-24 (+7d) | -83.71d → -89.71d |
| MOD-RWN-DB-005 | Waterproofing & sealant for Rainwater Drainage Network Zone 3 |  | 2026-10-25 → 2026-11-01 (+7d) | -83.71d → -89.71d |
| MOD-RWN-DB-006 | Backfill in controlled layers for Rainwater Drainage Network Zone 3 | 2026-10-25 → 2026-11-01 (+7d) | 2026-11-02 → 2026-11-09 (+7d) | -83.71d → -89.71d |
| 13 | **Potable Water Network Zone 3** |  | 2026-12-29 → 2027-01-05 (+7d) |  |
| 13 | **Pipe Installation Works** |  | 2026-10-20 → 2026-10-27 (+7d) |  |
| MOD-PWN-PI-323 | Lean Concrete / Pipe Bedding Preparation for Potable Water Network Zone 3 |  | 2026-10-11 → 2026-10-18 (+7d) | 72.15d → 65.15d |
| MOD-PWN-PI-333 | HDPE Pipe Laying (200 mm to 710 mm) for Potable Water Network Zone 3 |  | 2026-10-15 → 2026-10-22 (+7d) | 72.15d → 65.15d |
| MOD-PWN-PI-343 | Test (Pressure-slope) for Potable Water Network Zone 3 |  | 2026-10-16 → 2026-10-23 (+7d) | 72.15d → 65.15d |
| MOD-PWN-PI-353 | Coating / Wrapping for Potable Water Network Zone 3 |  | 2026-10-18 → 2026-10-25 (+7d) | 72.15d → 65.15d |
| MOD-PWN-PI-363 | Backfilling & Warrning Tape for Potable Water Network Zone 3 |  | 2026-10-20 → 2026-10-27 (+7d) | 72.15d → 65.15d |
| 2 | **Valve Installation & Chambers** |  | 2026-11-02 → 2026-11-09 (+7d) |  |
| MOD-PWN-VC-87 | Butterfly Valves (355, 500, 630 mm) for Potable Water Network Zone 3 |  | 2026-10-10 → 2026-10-17 (+7d) | 51.06d → 45.06d |
| MOD-PWN-VC-97 | 3-exit (2 x 2.5-inch and 1 x 4-inch) dry vacuum cylinder detachable fire nozzle for Potable Water Network Zone 3 |  | 2026-10-10 → 2026-10-17 (+7d) | 51.06d → 45.06d |
| MOD-PWN-VC-107 | Valve Chamber Excavation for Potable Water Network Zone 3 |  | 2026-10-10 → 2026-10-17 (+7d) | 51.06d → 45.06d |
| MOD-PWN-VC-117 | RC Slab, Walls, or Precast Chambers for Potable Water Network Zone 3 |  | 2026-10-10 → 2026-10-17 (+7d) | 51.06d → 45.06d |
| MOD-PWN-VC-77 | Gate Valves (225–710 mm) for Potable Water Network Zone 3 |  | 2026-10-10 → 2026-10-17 (+7d) | 51.06d → 45.06d |
| MOD-PWN-VC-127 | Fixing Covers, Gratings, Frames for Potable Water Network Zone 3 | 2026-10-10 → 2026-10-17 (+7d) | 2026-10-26 → 2026-11-02 (+7d) | 51.06d → 45.06d |
| MOD-PWN-VC-137 | Tagging & Painting for Potable Water Network Zone 3 | 2026-10-26 → 2026-11-02 (+7d) | 2026-11-02 → 2026-11-09 (+7d) | 51.06d → 45.06d |
| 3 | **Flow Meter Installation** |  | 2026-11-21 → 2026-11-28 (+7d) |  |
| MOD-PWN-FM-55 | Chamber Excavation (280 mm, 300 mm, 500 mm, 800 mm) for Potable Water Network Zone 3 |  | 2026-10-10 → 2026-10-17 (+7d) | 54.4d → 48.4d |
| MOD-PWN-FM-65 | RC or Precast Chamber Construction for Potable Water Network Zone 3 |  | 2026-10-14 → 2026-10-21 (+7d) | 54.4d → 48.4d |
| MOD-PWN-FM-75 | Flowmeter Installation & Pipe Integration for Potable Water Network Zone 3 |  | 2026-11-11 → 2026-11-18 (+7d) | 35.35d → 29.35d |
| MOD-PWN-FM-85 | Wiring/Cabling if applicable for Potable Water Network Zone 3 |  | 2026-11-17 → 2026-11-24 (+7d) | 35.35d → 29.35d |
| MOD-PWN-FM-95 | Calibration & Commissioning for Potable Water Network Zone 3 | 2026-11-17 → 2026-11-24 (+7d) | 2026-11-21 → 2026-11-28 (+7d) | 35.35d → 29.35d |
| 4 | **Washout & Air Valve Chambers** |  | 2026-10-15 → 2026-10-22 (+7d) |  |
| MOD-PWN-WA-87 | RC Blinding + Base + Walls for Potable Water Network Zone 3 |  | 2026-10-10 → 2026-10-17 (+7d) | 65.66d → 59.66d |

| ID | Task | Start | Finish | Complete | Total float |
| --- | --- | --- | --- | --- | --- |
| MOD-PWN-WA-97 | Pipe Work for Potable Water Network Zone 3 |  | 2026-10-11 → 2026-10-18 (+7d) |  | 65.66d → 59.66d |
| MOD-PWN-WA-107 | Washout (Valve + Outlet) Installation for Potable Water Network Zone 3 |  | 2026-10-12 → 2026-10-19 (+7d) | 88% → 90% | 65.66d → 59.66d |
| MOD-PWN-WA-117 | Air Valve Rooms (Valve + Outlet) Installation for Potable Water Network Zone 3 |  | 2026-10-13 → 2026-10-20 (+7d) | 88% → 90% | 65.66d → 59.66d |
| MOD-PWN-WA-127 | Covers, Ladders & Tags for Potable Water Network Zone 3 |  | 2026-10-13 → 2026-10-20 (+7d) |  | 65.66d → 59.66d |
| MOD-PWN-WA-137 | Backfilling & Final Finishing for Potable Water Network Zone 3 | 2026-10-13 → 2026-10-20 (+7d) | 2026-10-15 → 2026-10-22 (+7d) |  | 65.66d → 59.66d |
| 5 | **Pumping Station (Structure & Civil Works)** | 2026-10-10 → 2026-10-17 (+7d) | 2026-12-24 → 2026-12-31 (+7d) |  |  |
| MOD-PWN-PS-66 | Excavation & Blinding for Potable Water Network Zone 3 | 2026-10-10 → 2026-10-17 (+7d) | 2026-10-20 → 2026-10-27 (+7d) |  | 2.2d → -3.8d |
| MOD-PWN-PS-76 | Reinforced Concrete/GRP Shell Construction for Potable Water Network Zone 3 | 2026-10-21 → 2026-10-28 (+7d) | 2026-10-29 → 2026-11-05 (+7d) |  | 2.2d → -3.8d |
| MOD-PWN-PS-86 | Access Ladders, Tight Cover, Surface Guttering for Potable Water Network Zone 3 | 2026-10-31 → 2026-11-07 (+7d) | 2026-11-04 → 2026-11-11 (+7d) |  | 2.2d → -3.8d |
| MOD-PWN-PS-96 | Internal piping & embedded sleeves for Potable Water Network Zone 3 | 2026-11-05 → 2026-11-12 (+7d) | 2026-11-19 → 2026-11-26 (+7d) |  | 2.2d → -3.8d |
| MOD-PWN-PS-106 | Pump Base Pads + Grouting for Potable Water Network Zone 3 | 2026-11-21 → 2026-11-28 (+7d) | 2026-12-05 → 2026-12-12 (+7d) |  | 5.4d → -0.6d |
| MOD-PWN-PS-116 | Backfilling & External Finishes for Potable Water Network Zone 3 | 2026-12-06 → 2026-12-13 (+7d) | 2026-12-24 → 2026-12-31 (+7d) |  | 5.4d → -0.6d |
| 6 | **Pump Station Building** | 2026-11-21 → 2026-11-28 (+7d) | 2026-12-26 → 2027-01-02 (+7d) |  |  |
| MOD-PWN-PB-33 | Structure Construction (as per architectural drawings) for Potable Water Network Zone 3 | 2026-11-21 → 2026-11-28 (+7d) | 2026-12-05 → 2026-12-12 (+7d) |  | 2.2d → -3.8d |
| MOD-PWN-PB-43 | 5-ton Hoist Installation for Potable Water Network Zone 3 | 2026-12-06 → 2026-12-13 (+7d) | 2026-12-10 → 2026-12-17 (+7d) |  | 2.2d → -3.8d |
| MOD-PWN-PB-53 | Finishes, Doors, Ventilation for Potable Water Network Zone 3 | 2026-12-12 → 2026-12-19 (+7d) | 2026-12-26 → 2027-01-02 (+7d) |  | 2.2d → -3.8d |
| 7 | **Pumping Equipment & Fire Systems** | 2026-11-21 → 2026-11-28 (+7d) | 2026-12-22 → 2026-12-29 (+7d) |  |  |
| MOD-PWN-PE-88 | Main Pumps (250 kW, 295 L/s @ 60 m head) for Potable Water Network Zone 3 | 2026-11-21 → 2026-11-28 (+7d) | 2026-12-06 → 2026-12-13 (+7d) |  | 7.4d → 1.4d |
| MOD-PWN-PE-108 | Diesel Fire Water Pump (64 L/s @ 60 m) for Potable Water Network Zone 3 | 2026-12-07 → 2026-12-14 (+7d) | 2026-12-13 → 2026-12-20 (+7d) |  | 7.4d → 1.4d |
| MOD-PWN-PE-118 | Electric Jockey Pump for Potable Water Network Zone 3 | 2026-12-07 → 2026-12-14 (+7d) | 2026-12-13 → 2026-12-20 (+7d) |  | 7.4d → 1.4d |
| MOD-PWN-PE-128 | Submersible Fire Pumps (2 pcs, 10 L/s @ 10 m) for Potable Water Network Zone 3 | 2026-12-07 → 2026-12-14 (+7d) | 2026-12-10 → 2026-12-17 (+7d) |  | 7.4d → 1.4d |
| MOD-PWN-PE-98 | Electric Fire Water Pump (64 L/s @ 60 m) for Potable Water Network Zone 3 | 2026-12-07 → 2026-12-14 (+7d) | 2026-12-15 → 2026-12-22 (+7d) |  | 7.4d → 1.4d |
| MOD-PWN-PE-138 | Pipework connections within Pump Room for Potable Water Network Zone 3 | 2026-12-12 → 2026-12-19 (+7d) | 2026-12-16 → 2026-12-23 (+7d) |  | 7.4d → 1.4d |
| MOD-PWN-PE-148 | MCC & DB panel installation for Potable Water Network Zone 3 | 2026-12-17 → 2026-12-24 (+7d) | 2026-12-19 → 2026-12-26 (+7d) |  | 7.4d → 1.4d |
| MOD-PWN-PE-158 | Flow meter on 800mm pipe including flow meter chamber and 2-2.5m depth for Potable Water Network Zone 3 | 2026-12-20 → 2026-12-27 (+7d) | 2026-12-22 → 2026-12-29 (+7d) |  | 7.4d → 1.4d |
| 8 | **Surge Protection** | 2026-12-17 → 2026-12-24 (+7d) | 2026-12-22 → 2026-12-29 (+7d) |  |  |
| MOD-PWN-SP-22 | Surge Vessel Installation for Potable Water Network Zone 3 | 2026-12-17 → 2026-12-24 (+7d) | 2026-12-21 → 2026-12-28 (+7d) |  | 7.4d → 1.4d |
| MOD-PWN-SP-32 | Pipe Integration as per Surge Analysis for Potable Water Network Zone 3 | 2026-12-22 → 2026-12-29 (+7d) | 2026-12-22 → 2026-12-29 (+7d) |  | 7.4d → 1.4d |
| 9 | **Power & Generator System** | 2026-12-07 → 2026-12-14 (+7d) | 2026-12-20 → 2026-12-27 (+7d) |  |  |
| MOD-PWN-PG-44 | 500 kVA Standby Generator Installation for Potable Water Network Zone 3 | 2026-12-07 → 2026-12-14 (+7d) | 2026-12-10 → 2026-12-17 (+7d) |  | 9.4d → 3.4d |
| MOD-PWN-PG-54 | Canopy, Foundation & Fuel Tank for Potable Water Network Zone 3 | 2026-12-07 → 2026-12-14 (+7d) | 2026-12-13 → 2026-12-20 (+7d) |  | 9.4d → 3.4d |
| MOD-PWN-PG-64 | Electrical Cabling, Circuit Breakers for Potable Water Network Zone 3 | 2026-12-14 → 2026-12-21 (+7d) | 2026-12-17 → 2026-12-24 (+7d) |  | 9.4d → 3.4d |
| MOD-PWN-PG-74 | Earthing & Commissioning for Potable Water Network Zone 3 | 2026-12-19 → 2026-12-26 (+7d) | 2026-12-20 → 2026-12-27 (+7d) |  | 9.4d → 3.4d |
| 10 | **Chlorination System** | 2026-12-07 → 2026-12-14 (+7d) | 2026-12-22 → 2026-12-29 (+7d) |  |  |
| MOD-PWN-CS-33 | Chlorination Device Supply & Installation for Potable Water Network Zone 3 | 2026-12-07 → 2026-12-14 (+7d) | 2026-12-14 → 2026-12-21 (+7d) |  | 7.4d → 1.4d |
| MOD-PWN-CS-43 | Connections to Main Line or Disinfection Chamber for Potable Water Network Zone 3 | 2026-12-15 → 2026-12-22 (+7d) | 2026-12-19 → 2026-12-26 (+7d) |  | 7.4d → 1.4d |
| MOD-PWN-CS-53 | Control Integration for Potable Water Network Zone 3 | 2026-12-20 → 2026-12-27 (+7d) | 2026-12-22 → 2026-12-29 (+7d) |  | 7.4d → 1.4d |
| 11 | **Water Storage System** |  | 2026-12-29 → 2027-01-05 (+7d) |  |  |
| MOD-PWN-WS-11 | Structural tanks for supply or pressure equalization for Potable Water Network Zone 3 |  | 2026-12-29 → 2027-01-05 (+7d) |  | 2.2d → -3.8d |
| 12 | **Street Lighting** |  | 2026-12-13 → 2026-12-20 (+7d) |  |  |
| MOD-PWN-SL-75 | Pole & Fixture Installation for Potable Water Network Zone 3 |  | 2026-12-06 → 2026-12-13 (+7d) |  | 16.24d → 10.24d |
| MOD-PWN-SL-65 | Conduits, Cabling, Backfilling for Potable Water Network Zone 3 |  | 2026-12-06 → 2026-12-13 (+7d) |  | 16.24d → 10.24d |
| MOD-PWN-SL-85 | Connection to Main Supply for Potable Water Network Zone 3 | 2026-12-06 → 2026-12-13 (+7d) | 2026-12-13 → 2026-12-20 (+7d) |  | 16.24d → 10.24d |
| MOD-PWN-SL-95 | Testing & Lighting Commissioning for Potable Water Network Zone 3 | 2026-12-06 → 2026-12-13 (+7d) | 2026-12-13 → 2026-12-20 (+7d) |  | 16.24d → 10.24d |
| 6 | **Irrigation Network Zone 3** |  | 2026-11-15 → 2026-11-22 (+7d) |  |  |
| 1 | **Excavation, Pipe Laying & Backfilling** |  | 2026-10-16 → 2026-10-23 (+7d) |  |  |
| MOD-IRN-EB-120 | Trench Excavation for Irrigation Network Zone 3 |  | 2026-10-12 → 2026-10-19 (+7d) |  | 75.48d → 68.48d |
| MOD-IRN-EB-130 | Lean Concrete / Pipe Bedding with Type B Material for Irrigation Network Zone 3 |  | 2026-10-12 → 2026-10-19 (+7d) |  | 75.48d → 68.48d |
| MOD-IRN-EB-140 | HDPE Pipe Laying (125 mm to 630 mm) for Irrigation Network Zone 3 |  | 2026-10-15 → 2026-10-22 (+7d) |  | 75.48d → 68.48d |
| MOD-IRN-EB-150 | Test (Pressure-slope) for Irrigation Network Zone 3 |  | 2026-10-15 → 2026-10-22 (+7d) |  | 75.48d → 68.48d |
| MOD-IRN-EB-180 | Coating / Wrapping for Irrigation Network Zone 3 |  | 2026-10-15 → 2026-10-22 (+7d) |  | 75.48d → 68.48d |
| MOD-IRN-EB-190 | Backfilling & Warrning Tape for Irrigation Network Zone 3 |  | 2026-10-16 → 2026-10-23 (+7d) |  | 75.48d → 68.48d |
| 2 | **Valves and Appurtenances** |  | 2026-10-13 → 2026-10-20 (+7d) |  |  |
| MOD-IRN-VA-65 | Supply & Installation of Valves (Butterfly Valve) for Irrigation Network Zone 3 |  | 2026-10-11 → 2026-10-18 (+7d) |  | 68d → 62d |
| MOD-IRN-VA-75 | Installation of Flanges, Bolts, Collars, Nuts for Irrigation Network Zone 3 |  | 2026-10-12 → 2026-10-19 (+7d) |  | 68d → 62d |
| MOD-IRN-VA-85 | Valve Pressure Testing for Irrigation Network Zone 3 |  | 2026-10-12 → 2026-10-19 (+7d) |  | 68d → 62d |
| MOD-IRN-VA-95 | Support Brackets/Anchor Blocks for Irrigation Network Zone 3 |  | 2026-10-13 → 2026-10-20 (+7d) |  | 68d → 62d |
| 3 | **Valve Rooms** |  | 2026-10-10 → 2026-10-17 (+7d) |  |  |
| MOD-IRN-VR-137 | Backfilling and Finishing Valve Chamber for Irrigation Network Zone 3 |  | 2026-10-10 → 2026-10-17 (+7d) |  | 71.1d → 65.1d |
| 4 | **Washout Chambers** |  | 2026-10-11 → 2026-10-18 (+7d) |  |  |
| MOD-IRN-WC-96 | Washout Valve & Pipe Connection Washout Chamber for Irrigation Network Zone 3 |  | 2026-10-10 → 2026-10-17 (+7d) |  | 70.1d → 64.1d |
| MOD-IRN-WC-106 | Manhole Frame, Cover & Ladder Fixing Washout Chamber for Irrigation Network Zone 3 |  | 2026-10-10 → 2026-10-17 (+7d) |  | 70.1d → 64.1d |
| MOD-IRN-WC-116 | Backfilling & Reinstatement Washout Chamber for Irrigation Network Zone 3 |  | 2026-10-11 → 2026-10-18 (+7d) |  | 70.1d → 64.1d |
| 5 | **Air Valve Chambers** |  | 2026-10-10 → 2026-10-17 (+7d) |  |  |
| MOD-IRN-AC-95 | Cover Fixing & Finishing Air Valve Chamber for Irrigation Network Zone 3 |  | 2026-10-10 → 2026-10-17 (+7d) |  | 71.3d → 65.3d |
| 6 | **Flow Meter Chambers** |  | 2026-11-15 → 2026-11-22 (+7d) |  |  |
| MOD-IRN-FC-76 | RCC Base & Wall Construction Flow Meter Chamber for Irrigation Network Zone 3 |  | 2026-10-10 → 2026-10-17 (+7d) |  | 62d → 56d |
| MOD-IRN-FC-86 | Flow Meter Installation (280, 300, 500 mm) Flow Meter Chamber for Irrigation Network Zone 3 |  | 2026-11-07 → 2026-11-14 (+7d) |  | 39.55d → 33.55d |
| MOD-IRN-FC-96 | Integration with Pipework Flow Meter Chamber for Irrigation Network Zone 3 |  | 2026-11-08 → 2026-11-15 (+7d) |  | 39.55d → 33.55d |
| MOD-IRN-FC-106 | Testing & Calibration Flow Meter Chamber for Irrigation Network Zone 3 |  | 2026-11-10 → 2026-11-17 (+7d) |  | 39.55d → 33.55d |

| ID | Task | Start | Finish | Complete | Total float |
| --- | --- | --- | --- | --- | --- |
| MOD-IRN-FC-116 | Cover and Access Arrangement Flow Meter Chamber for Irrigation Network Zone 3 | 2026-11-10 → 2026-11-17 (+7d) | 2026-11-15 → 2026-11-22 (+7d) |  | 39.55d → 33.55d |
| MOD-RCP-BW-75 | Compact each layer to required density for Rainwater Collection Ponds Zone 3 |  |  | 80% → 90% |  |
| MOD-RCP-BW-65 | Place in layers not exceeding 300mm for Rainwater Collection Ponds Zone 3 |  |  | 88% → 90% |  |
| MOD-RCP-BW-85 | Conduct field density tests for Rainwater Collection Ponds Zone 3 |  |  | 80% → 90% |  |
| 5 | **Sewerage Network Zone 2** |  | 2026-12-15 → 2026-12-22 (+7d) |  |  |
| 1 | **Pipework: Supply, Installation, and Testing** |  | 2026-12-02 → 2026-12-09 (+7d) |  |  |
| 3 | **HDPE Pressure Pipes Installation (250mm–630mm)** |  | 2026-12-02 → 2026-12-09 (+7d) |  |  |
| MOD-SWN-PW-585 | Excavation and Trenching HDPE for Sewerage Network Zone 2 |  | 2026-10-14 → 2026-10-21 (+7d) |  | 87.1d → 80.1d |
| MOD-SWN-PW-595 | Lean Concrete / Bedding HDPE for Sewerage Network Zone 2 |  | 2026-10-22 → 2026-10-29 (+7d) |  | 87.1d → 80.1d |
| MOD-SWN-PW-465 | HDPE Pressure Pipes Installation (250mm–630mm) HDPE for Sewerage Network Zone 2 |  | 2026-11-02 → 2026-11-09 (+7d) |  | 87.1d → 80.1d |
| MOD-SWN-PW-605 | Test (Pressure - Slope) HDPE for Sewerage Network Zone 2 |  | 2026-11-09 → 2026-11-16 (+7d) |  | 105.7d → 98.7d |
| MOD-SWN-PW-615 | Coating / Wrapping HDPE for Sewerage Network Zone 2 |  | 2026-11-17 → 2026-11-24 (+7d) |  | 105.7d → 98.7d |
| MOD-SWN-PW-575 | Backfilling & Warrning Tape HDPE for Sewerage Network Zone 2 | 2026-11-18 → 2026-11-25 (+7d) | 2026-12-02 → 2026-12-09 (+7d) |  | 105.7d → 98.7d |
| 2 | **Fittings and Valves** | 2026-11-02 → 2026-11-09 (+7d) | 2026-12-03 → 2026-12-10 (+7d) |  |  |
| MOD-SWN-FV-5 | Supply & Installation of HDPE Elbows for Sewerage Network Zone 2 | 2026-11-02 → 2026-11-09 (+7d) | 2026-11-09 → 2026-11-16 (+7d) |  | 75.1d → 69.1d |
| MOD-SWN-FV-15 | Gate Valves Installation for Sewerage Network Zone 2 | 2026-11-09 → 2026-11-16 (+7d) | 2026-11-14 → 2026-11-21 (+7d) |  | 75.1d → 69.1d |
| MOD-SWN-FV-25 | Drain Valves Installation for Sewerage Network Zone 2 | 2026-11-14 → 2026-11-21 (+7d) | 2026-11-18 → 2026-11-25 (+7d) |  | 75.1d → 69.1d |
| MOD-SWN-FV-35 | Air Breather & Air Release Valves Installation for Sewerage Network Zone 2 | 2026-11-18 → 2026-11-25 (+7d) | 2026-11-30 → 2026-12-07 (+7d) |  | 75.1d → 69.1d |
| MOD-SWN-FV-45 | Jointing & Piping Accessories Installation for Sewerage Network Zone 2 | 2026-11-30 → 2026-12-07 (+7d) | 2026-12-03 → 2026-12-10 (+7d) |  | 75.1d → 69.1d |
| 3 | **Valve & Flow Meter Chambers** |  | 2026-12-15 → 2026-12-22 (+7d) |  |  |
| 1 | **Valve Chambers Construction** |  | 2026-11-24 → 2026-12-01 (+7d) |  |  |
| MOD-SWN-PW-975 | Excavation Valve Chamber for Sewerage Network Zone 2 |  | 2026-10-14 → 2026-10-21 (+7d) |  | 93.1d → 86.1d |
| MOD-SWN-PW-985 | Lean Concrete / Bedding Valve Chamber for Sewerage Network Zone 2 |  | 2026-10-22 → 2026-10-29 (+7d) |  | 93.1d → 86.1d |
| MOD-SWN-VF-124 | Valve Chambers Construction Valve Chamber for Sewerage Network Zone 2 |  | 2026-10-25 → 2026-11-01 (+7d) |  | 93.1d → 86.1d |
| MOD-SWN-PW-995 | Test Valve Chamber for Sewerage Network Zone 2 | 2026-10-25 → 2026-11-01 (+7d) | 2026-11-09 → 2026-11-16 (+7d) |  | 114.1d → 107.1d |
| MOD-SWN-PW-965 | Backfilling Valve Chamber for Sewerage Network Zone 2 | 2026-11-09 → 2026-11-16 (+7d) | 2026-11-24 → 2026-12-01 (+7d) |  | 114.1d → 107.1d |
| 2 | **Water Drain Chambers Construction** |  | 2026-12-04 → 2026-12-11 (+7d) |  |  |
| MOD-SWN-PW-1015 | Excavation Water Drain Chamber for Sewerage Network Zone 2 |  | 2026-10-14 → 2026-10-21 (+7d) |  | 96.1d → 89.1d |
| MOD-SWN-PW-1025 | Lean Concrete / Bedding Water Drain Chamber for Sewerage Network Zone 2 |  | 2026-10-22 → 2026-10-29 (+7d) |  | 96.1d → 89.1d |
| MOD-SWN-VF-134 | Water Drain Chambers Construction Water Drain Chamber for Sewerage Network Zone 2 |  | 2026-11-04 → 2026-11-11 (+7d) |  | 93.1d → 86.1d |
| MOD-SWN-PW-1035 | Test Water Drain Chamber for Sewerage Network Zone 2 | 2026-11-04 → 2026-11-11 (+7d) | 2026-11-19 → 2026-11-26 (+7d) |  | 104.6d → 97.6d |
| MOD-SWN-PW-1005 | Backfilling Water Drain Chamber for Sewerage Network Zone 2 | 2026-11-19 → 2026-11-26 (+7d) | 2026-12-04 → 2026-12-11 (+7d) |  | 104.6d → 97.6d |
| 3 | **Discharge Chambers Construction** |  | 2026-12-10 → 2026-12-17 (+7d) |  |  |
| MOD-SWN-PW-1055 | Excavation Discharge Chamber for Sewerage Network Zone 2 |  | 2026-10-18 → 2026-10-25 (+7d) |  | 99.3d → 92.3d |
| MOD-SWN-PW-1065 | Lean Concrete / Bedding Discharge Chamber for Sewerage Network Zone 2 |  | 2026-10-28 → 2026-11-04 (+7d) |  | 99.3d → 92.3d |
| MOD-SWN-VF-144 | Discharge Chambers Construction Discharge Chamber for Sewerage Network Zone 2 |  | 2026-11-10 → 2026-11-17 (+7d) |  | 93.1d → 86.1d |
| MOD-SWN-PW-1075 | Test Discharge Chamber for Sewerage Network Zone 2 | 2026-11-10 → 2026-11-17 (+7d) | 2026-11-25 → 2026-12-02 (+7d) |  | 98.1d → 91.1d |
| MOD-SWN-PW-1045 | Backfilling Discharge Chamber for Sewerage Network Zone 2 | 2026-11-25 → 2026-12-02 (+7d) | 2026-12-10 → 2026-12-17 (+7d) |  | 98.1d → 91.1d |
| 4 | **Flow Meter Chambers Construction** |  | 2026-12-15 → 2026-12-22 (+7d) |  |  |
| MOD-SWN-PW-1095 | Excavation Flow Meter Chamber for Sewerage Network Zone 2 |  | 2026-10-18 → 2026-10-25 (+7d) |  | 103.7d → 96.7d |
| MOD-SWN-PW-1105 | Lean Concrete / Bedding Flow Meter Chamber for Sewerage Network Zone 2 |  | 2026-10-30 → 2026-11-06 (+7d) |  | 103.7d → 96.7d |
| MOD-SWN-VF-154 | Flow Meter Chambers Construction Flow Meter Chamber for Sewerage Network Zone 2 | 2026-11-10 → 2026-11-17 (+7d) | 2026-11-15 → 2026-11-22 (+7d) |  | 93.1d → 86.1d |
| MOD-SWN-PW-1115 | Test Flow Meter Chamber for Sewerage Network Zone 2 | 2026-11-15 → 2026-11-22 (+7d) | 2026-11-30 → 2026-12-07 (+7d) |  | 93.1d → 86.1d |
| MOD-SWN-PW-1085 | Backfilling Flow Meter Chamber for Sewerage Network Zone 2 | 2026-11-30 → 2026-12-07 (+7d) | 2026-12-15 → 2026-12-22 (+7d) |  | 93.1d → 86.1d |
| 4 | **Manholes** |  | 2026-11-21 → 2026-11-28 (+7d) |  |  |
| 1 | **1200mm GRP Manholes with Backdrop** |  | 2026-11-15 → 2026-11-22 (+7d) |  |  |
| MOD-SWN-PW-1455 | Excavation 1.2m GRP for Sewerage Network Zone 2 |  | 2026-10-11 → 2026-10-18 (+7d) |  | 117.49d → 110.49d |
| MOD-SWN-PW-1465 | Lean Concrete / Bedding 1.2m GRP for Sewerage Network Zone 2 |  | 2026-10-13 → 2026-10-20 (+7d) |  | 117.49d → 110.49d |
| MOD-SWN-MH-145 | 1200mm GRP Manholes with Backdrop 1.2m GRP for Sewerage Network Zone 2 |  | 2026-10-16 → 2026-10-23 (+7d) |  | 117.49d → 110.49d |
| MOD-SWN-PW-1475 | Test 1.2m GRP for Sewerage Network Zone 2 | 2026-10-16 → 2026-10-23 (+7d) | 2026-10-31 → 2026-11-07 (+7d) |  | 123.4d → 116.4d |
| MOD-SWN-PW-1445 | Backfilling 1.2m GRP for Sewerage Network Zone 2 | 2026-10-31 → 2026-11-07 (+7d) | 2026-11-15 → 2026-11-22 (+7d) |  | 123.4d → 116.4d |
| 2 | **1500mm GRP Manholes (Standard & Backdrop)** |  | 2026-11-18 → 2026-11-25 (+7d) |  |  |
| MOD-SWN-PW-1495 | Excavation 1.5m GRP for Sewerage Network Zone 2 |  | 2026-10-12 → 2026-10-19 (+7d) |  | 119.17d → 112.17d |
| MOD-SWN-PW-1505 | Lean Concrete / Bedding 1.5m GRP for Sewerage Network Zone 2 |  | 2026-10-14 → 2026-10-21 (+7d) |  | 119.17d → 112.17d |
| MOD-SWN-MH-155 | 1500mm GRP Manholes (Standard & Backdrop) 1.5m GRP for Sewerage Network Zone 2 |  | 2026-10-19 → 2026-10-26 (+7d) |  | 117.49d → 110.49d |
| MOD-SWN-PW-1515 | Test 1.5m GRP for Sewerage Network Zone 2 | 2026-10-19 → 2026-10-26 (+7d) | 2026-11-03 → 2026-11-10 (+7d) |  | 120.25d → 113.25d |
| MOD-SWN-PW-1485 | Backfilling 1.5m GRP for Sewerage Network Zone 2 | 2026-11-03 → 2026-11-10 (+7d) | 2026-11-18 → 2026-11-25 (+7d) |  | 120.25d → 113.25d |
| 3 | **1800mm GRP Manholes (Standard & Backdrop)** |  | 2026-11-20 → 2026-11-27 (+7d) |  |  |
| MOD-SWN-PW-1535 | Excavation 1.8m GRP for Sewerage Network Zone 2 |  | 2026-10-11 → 2026-10-18 (+7d) |  | 123.16d → 116.16d |
| MOD-SWN-PW-1545 | Lean Concrete / Bedding 1.8m GRP for Sewerage Network Zone 2 |  | 2026-10-13 → 2026-10-20 (+7d) |  | 123.16d → 116.16d |
| MOD-SWN-MH-165 | 1800mm GRP Manholes (Standard & Backdrop) 1.8m GRP for Sewerage Network Zone 2 |  | 2026-10-21 → 2026-10-28 (+7d) |  | 117.49d → 110.49d |
| MOD-SWN-PW-1555 | Test 1.8m GRP for Sewerage Network Zone 2 | 2026-10-21 → 2026-10-28 (+7d) | 2026-11-05 → 2026-11-12 (+7d) |  | 118.21d → 111.21d |
| MOD-SWN-PW-1525 | Backfilling 1.8m GRP for Sewerage Network Zone 2 | 2026-11-05 → 2026-11-12 (+7d) | 2026-11-20 → 2026-11-27 (+7d) |  | 118.21d → 111.21d |
| 4 | **2000mm GRP Manholes (Standard & Backdrop)** |  | 2026-11-21 → 2026-11-28 (+7d) |  |  |
| MOD-SWN-PW-1575 | Excavation 2m GRP for Sewerage Network Zone 2 |  | 2026-10-11 → 2026-10-18 (+7d) |  | 125.41d → 118.41d |
| MOD-SWN-PW-1585 | Lean Concrete / Bedding 2m GRP for Sewerage Network Zone 2 |  | 2026-10-13 → 2026-10-20 (+7d) |  | 125.41d → 118.41d |
| MOD-SWN-MH-175 | 2000mm GRP Manholes (Standard & Backdrop) 2m GRP for Sewerage Network Zone 2 |  | 2026-10-22 → 2026-10-29 (+7d) |  | 117.49d → 110.49d |
| MOD-SWN-PW-1595 | Test 2m GRP for Sewerage Network Zone 2 | 2026-10-22 → 2026-10-29 (+7d) | 2026-11-06 → 2026-11-13 (+7d) |  | 117.49d → 110.49d |
| MOD-SWN-PW-1565 | Backfilling 2m GRP for Sewerage Network Zone 2 | 2026-11-06 → 2026-11-13 (+7d) | 2026-11-21 → 2026-11-28 (+7d) |  | 117.49d → 110.49d |
| 6 | **Rainwater Drainage Network Zone 2** |  | 2026-11-17 → 2026-11-24 (+7d) |  |  |

| ID | Task | Start | Finish | Total float |
| --- | --- | --- | --- | --- |
| 1 | **Pipe Laying Works** |  | 2026-10-14 → 2026-10-21 (+7d) |  |
| 2 | **Supply & Installation of uPVC Pipes (250–300mm dia)** |  | 2026-10-11 → 2026-10-18 (+7d) |  |
| MOD-RWN-PL-753 | Laying of uPVC pipe UPVC for Rainwater Drainage Network Zone 2 |  | 2026-10-10 → 2026-10-17 (+7d) | -79.3d → -86.3d |
| MOD-RWN-PL-763 | Coating / Wrapping UPVC for Rainwater Drainage Network Zone 2 |  | 2026-10-10 → 2026-10-17 (+7d) | -75.6d → -82.6d |
| MOD-RWN-PL-773 | Test (Pressure-slope) UPVC for Rainwater Drainage Network Zone 2 |  | 2026-10-10 → 2026-10-17 (+7d) | -79.3d → -86.3d |
| MOD-RWN-PL-783 | Backfilling & Warning Tape UPVC for Rainwater Drainage Network Zone 2 |  | 2026-10-11 → 2026-10-18 (+7d) | -76.84d → -83.84d |
| 4 | **uPVC Connection Pipes (150mm dia)** |  | 2026-10-14 → 2026-10-21 (+7d) |  |
| MOD-RWN-PL-853 | Lean Concrete / bedding material UPVC Con. for Rainwater Drainage Network Zone 2 |  | 2026-10-10 → 2026-10-17 (+7d) | -79.26d → -86.26d |
| MOD-RWN-PL-863 | Lay & connect UPVC Con. for Rainwater Drainage Network Zone 2 |  | 2026-10-10 → 2026-10-17 (+7d) | -79.3d → -86.3d |
| MOD-RWN-PL-873 | Test (Pressure-slope) UPVC Con. for Rainwater Drainage Network Zone 2 |  | 2026-10-10 → 2026-10-17 (+7d) | -79.3d → -86.3d |
| MOD-RWN-PL-883 | Backfilling & compaction UPVC Con. for Rainwater Drainage Network Zone 2 |  | 2026-10-14 → 2026-10-21 (+7d) | -79.3d → -86.3d |
| MOD-RWN-PL-903 | Coating / Wrapping UPVC Con. for Rainwater Drainage Network Zone 2 |  | 2026-10-14 → 2026-10-21 (+7d) | -79.3d → -86.3d |
| 5 | **Precast Concrete Box Culverts** |  | 2026-11-16 → 2026-11-23 (+7d) |  |
| 1 | **Box Culverts (500x500mm to 3500x800mm)** |  | 2026-11-16 → 2026-11-23 (+7d) |  |
| MOD-RWN-PC-34 | Excavation to required depth Box culvert for Rainwater Drainage Network Zone 2 |  | 2026-10-11 → 2026-10-18 (+7d) | -96.31d → -102.31d |
| MOD-RWN-PC-44 | Dewatering and trench shoring Box culvert for Rainwater Drainage Network Zone 2 |  | 2026-10-13 → 2026-10-20 (+7d) | -96.31d → -102.31d |
| MOD-RWN-PC-54 | Bedding preparation (gravel/lean concrete) Box culvert for Rainwater Drainage Network Zone 2 |  | 2026-10-17 → 2026-10-24 (+7d) | -96.31d → -102.31d |
| MOD-RWN-PC-64 | Installation of box culvert units Box culvert for Rainwater Drainage Network Zone 2 | 2026-10-17 → 2026-10-24 (+7d) | 2026-10-22 → 2026-10-29 (+7d) | -96.31d → -102.31d |
| MOD-RWN-PC-74 | Alignment and joint sealing Box culvert for Rainwater Drainage Network Zone 2 | 2026-10-22 → 2026-10-29 (+7d) | 2026-10-27 → 2026-11-03 (+7d) | -95.61d → -101.61d |
| MOD-RWN-PC-84 | Construct headwalls/wing walls (if needed) Box culvert for Rainwater Drainage Network Zone 2 | 2026-10-27 → 2026-11-03 (+7d) | 2026-11-04 → 2026-11-11 (+7d) | -95.61d → -101.61d |
| MOD-RWN-PC-94 | Backfilling and compaction Box culvert for Rainwater Drainage Network Zone 2 | 2026-11-04 → 2026-11-11 (+7d) | 2026-11-11 → 2026-11-18 (+7d) | -95.61d → -101.61d |
| MOD-RWN-PC-104 | Surface finishing Box culvert for Rainwater Drainage Network Zone 2 | 2026-11-12 → 2026-11-19 (+7d) | 2026-11-16 → 2026-11-23 (+7d) | -95.61d → -101.61d |
| 2 | **Tube Culverts at Road Intersections** |  | 2026-10-17 → 2026-10-24 (+7d) |  |
| MOD-RWN-PC-124 | Trench excavation under road Tube culvert for Rainwater Drainage Network Zone 2 |  | 2026-10-17 → 2026-10-24 (+7d) | -69.51d → -75.51d |
| 3 | **Box Culverts at Road Intersections** |  | 2026-11-10 → 2026-11-17 (+7d) |  |
| MOD-RWN-PC-184 | Place bedding material for Rainwater Drainage Network Zone 2 |  | 2026-10-11 → 2026-10-18 (+7d) | -90.96d → -96.96d |
| MOD-RWN-PC-194 | Install precast box culvert for Rainwater Drainage Network Zone 2 | 2026-10-12 → 2026-10-19 (+7d) | 2026-10-15 → 2026-10-22 (+7d) | -90.96d → -96.96d |
| MOD-RWN-PC-204 | Construct connection chambers (if needed) for Rainwater Drainage Network Zone 2 | 2026-10-17 → 2026-10-24 (+7d) | 2026-10-17 → 2026-10-24 (+7d) | -90.96d → -96.96d |
| MOD-RWN-PC-214 | Joint treatment and testing for Rainwater Drainage Network Zone 2 | 2026-10-18 → 2026-10-25 (+7d) | 2026-10-31 → 2026-11-07 (+7d) | -90.96d → -96.96d |
| MOD-RWN-PC-224 | Backfilling and surface reinstatement for Rainwater Drainage Network Zone 2 | 2026-11-01 → 2026-11-08 (+7d) | 2026-11-10 → 2026-11-17 (+7d) | -90.96d → -96.96d |
| 4 | **Manholes** |  | 2026-11-17 → 2026-11-24 (+7d) |  |
| 1 | **Circular GRP Manholes (1200–1800mm dia)** |  | 2026-10-29 → 2026-11-05 (+7d) |  |
| MOD-RWN-MH-34 | Dewatering and safety barriers Circular Manhole for Rainwater Drainage Network Zone 2 |  | 2026-10-18 → 2026-10-25 (+7d) | -80.66d → -86.66d |
| MOD-RWN-MH-44 | Concrete base construction Circular Manhole for Rainwater Drainage Network Zone 2 |  | 2026-10-19 → 2026-10-26 (+7d) | -80.66d → -86.66d |
| MOD-RWN-MH-54 | Install GRP manhole shaft sections Circular Manhole for Rainwater Drainage Network Zone 2 |  | 2026-10-21 → 2026-10-28 (+7d) | -80.66d → -86.66d |
| MOD-RWN-MH-64 | Place slab and cover frame Circular Manhole for Rainwater Drainage Network Zone 2 |  | 2026-10-24 → 2026-10-31 (+7d) | -80.66d → -86.66d |
| MOD-RWN-MH-74 | Waterproofing Circular Manhole for Rainwater Drainage Network Zone 2 | 2026-10-24 → 2026-10-31 (+7d) | 2026-10-26 → 2026-11-02 (+7d) | -80.66d → -86.66d |
| MOD-RWN-MH-84 | Backfilling and compaction Circular Manhole for Rainwater Drainage Network Zone 2 | 2026-10-27 → 2026-11-03 (+7d) | 2026-10-29 → 2026-11-05 (+7d) | -80.66d → -86.66d |
| 3 | **Concrete Manholes for 1500x1500 Box Pipes** |  | 2026-11-01 → 2026-11-08 (+7d) |  |
| MOD-RWN-MH-174 | Base slab and wall shuttering Concrete Manhole 1.5x1.5 for Rainwater Drainage Network Zone 2 |  | 2026-10-18 → 2026-10-25 (+7d) | -82.66d → -88.66d |
| MOD-RWN-MH-184 | Wall reinforcement and casting Concrete Manhole 1.5x1.5 for Rainwater Drainage Network Zone 2 |  | 2026-10-21 → 2026-10-28 (+7d) | -82.66d → -88.66d |
| MOD-RWN-MH-194 | Roof slab with openings Concrete Manhole 1.5x1.5 for Rainwater Drainage Network Zone 2 |  | 2026-10-24 → 2026-10-31 (+7d) | -82.66d → -88.66d |
| MOD-RWN-MH-204 | Masonry/benching works inside Concrete Manhole 1.5x1.5 for Rainwater Drainage Network Zone 2 | 2026-10-24 → 2026-10-31 (+7d) | 2026-10-26 → 2026-11-02 (+7d) | -82.66d → -88.66d |
| MOD-RWN-MH-214 | Install cover and frame Concrete Manhole 1.5x1.5 for Rainwater Drainage Network Zone 2 | 2026-10-26 → 2026-11-02 (+7d) | 2026-10-28 → 2026-11-04 (+7d) | -82.66d → -88.66d |
| MOD-RWN-MH-224 | Backfill in layers Concrete Manhole 1.5x1.5 for Rainwater Drainage Network Zone 2 | 2026-10-28 → 2026-11-04 (+7d) | 2026-11-01 → 2026-11-08 (+7d) | -82.66d → -88.66d |
| 2 | **Concrete Manholes for 1000x1000 Box Pipes** |  | 2026-11-17 → 2026-11-24 (+7d) |  |
| MOD-RWN-MH-94 | Excavation Concrete Manhole 1x1 for Rainwater Drainage Network Zone 2 |  | 2026-10-19 → 2026-10-26 (+7d) | -96.31d → -102.31d |
| MOD-RWN-MH-104 | Base slab and wall shuttering Concrete Manhole 1x1 for Rainwater Drainage Network Zone 2 | 2026-10-19 → 2026-10-26 (+7d) | 2026-10-21 → 2026-10-28 (+7d) | -96.31d → -102.31d |
| MOD-RWN-MH-114 | Wall reinforcement and casting Concrete Manhole 1x1 for Rainwater Drainage Network Zone 2 | 2026-10-21 → 2026-10-28 (+7d) | 2026-10-27 → 2026-11-03 (+7d) | -96.31d → -102.31d |
| MOD-RWN-MH-124 | Roof slab with openings Concrete Manhole 1x1 for Rainwater Drainage Network Zone 2 | 2026-10-27 → 2026-11-03 (+7d) | 2026-11-03 → 2026-11-10 (+7d) | -96.31d → -102.31d |
| MOD-RWN-MH-134 | Masonry/benching works inside Concrete Manhole 1x1 for Rainwater Drainage Network Zone 2 | 2026-11-03 → 2026-11-10 (+7d) | 2026-11-09 → 2026-11-16 (+7d) | -96.31d → -102.31d |
| MOD-RWN-MH-144 | Install cover and frame Concrete Manhole 1x1 for Rainwater Drainage Network Zone 2 | 2026-11-09 → 2026-11-16 (+7d) | 2026-11-14 → 2026-11-21 (+7d) | -96.31d → -102.31d |
| MOD-RWN-MH-154 | Backfill in layers Concrete Manhole 1x1 for Rainwater Drainage Network Zone 2 | 2026-11-14 → 2026-11-21 (+7d) | 2026-11-17 → 2026-11-24 (+7d) | -96.31d → -102.31d |
| 3 | **Gully Outfalls to Swales** |  | 2026-11-01 → 2026-11-08 (+7d) |  |
| 1 | **Gully Outfalls to Swales** |  | 2026-10-21 → 2026-10-28 (+7d) |  |
| MOD-RWN-GO-21 | Excavate outfall channel Gully Outfall to Swales for Rainwater Drainage Network Zone 2 |  | 2026-10-17 → 2026-10-24 (+7d) | -73.61d → -79.61d |
| MOD-RWN-GO-31 | Place concrete apron or pipes Gully Outfall to Swales for Rainwater Drainage Network Zone 2 |  | 2026-10-18 → 2026-10-25 (+7d) | -73.61d → -79.61d |
| MOD-RWN-GO-41 | Provide slope protection (riprap) Gully Outfall to Swales for Rainwater Drainage Network Zone 2 |  | 2026-10-18 → 2026-10-25 (+7d) | -73.61d → -79.61d |
| MOD-RWN-GO-51 | Compact and shape terrain Gully Outfall to Swales for Rainwater Drainage Network Zone 2 | 2026-10-19 → 2026-10-26 (+7d) | 2026-10-21 → 2026-10-28 (+7d) | -73.61d → -79.61d |
| 2 | **Riprap Works & Protection** |  | 2026-11-01 → 2026-11-08 (+7d) |  |
| MOD-RWN-GO-61 | Lay filter fabric/membrane for Rainwater Drainage Network Zone 2 |  | 2026-10-18 → 2026-10-25 (+7d) | -82.41d → -88.41d |
| MOD-RWN-GO-71 | Place riprap/stone layer for Rainwater Drainage Network Zone 2 |  | 2026-10-22 → 2026-10-29 (+7d) | -82.41d → -88.41d |
| MOD-RWN-GO-81 | Compact edges for Rainwater Drainage Network Zone 2 | 2026-10-22 → 2026-10-29 (+7d) | 2026-10-28 → 2026-11-04 (+7d) | -82.41d → -88.41d |
| MOD-RWN-GO-91 | Ensure hydraulic flow direction for Rainwater Drainage Network Zone 2 | 2026-10-28 → 2026-11-04 (+7d) | 2026-11-01 → 2026-11-08 (+7d) | -82.41d → -88.41d |
| 6 | **Backfilling & Bedding** |  | 2026-10-19 → 2026-10-26 (+7d) |  |
| 2 | **Gravel Bedding & Filter Cloth for uPVC Drain Pipes** |  | 2026-10-19 → 2026-10-26 (+7d) |  |
| MOD-RWN-BB-102 | Final fill and trench restoration for Rainwater Drainage Network Zone 2 |  | 2026-10-19 → 2026-10-26 (+7d) | -71.75d → -77.75d |
| MOD-RWN-BB-62 | Line trench with filter cloth for Rainwater Drainage Network Zone 2 |  | 2026-10-12 → 2026-10-19 (+7d) | -71.75d → -77.75d |
| MOD-RWN-BB-72 | Place and compact gravel bedding for Rainwater Drainage Network Zone 2 |  | 2026-10-12 → 2026-10-19 (+7d) | -71.75d → -77.75d |
| MOD-RWN-BB-82 | Lay pipe within gravel zone for Rainwater Drainage Network Zone 2 |  | 2026-10-14 → 2026-10-21 (+7d) | -71.75d → -77.75d |

| ID | Task | Start | Finish | Complete | Total float |
| --- | --- | --- | --- | --- | --- |
| MOD-RWN-BB-92 | Wrap filter cloth above pipe for Rainwater Drainage Network Zone 2 |  | 2026-10-17 → 2026-10-24 (+7d) |  | -71.75d → -77.75d |
| 1 | **Potable Water Network Zone 2** |  | 2026-11-25 → 2026-12-02 (+7d) |  |  |
| 1 | **Pipe Installation Works** |  | 2026-10-11 → 2026-10-18 (+7d) |  |  |
| MOD-PWN-PI-153 | Lean Concrete / Pipe Bedding Preparation for Potable Water Network Zone 2 |  | 2026-10-10 → 2026-10-17 (+7d) |  | 81d → 74d |
| MOD-PWN-PI-163 | HDPE Pipe Laying (200 mm to 710 mm) for Potable Water Network Zone 2 |  | 2026-10-10 → 2026-10-17 (+7d) |  | 81d → 74d |
| MOD-PWN-PI-173 | Test (Pressure-slope) for Potable Water Network Zone 2 |  | 2026-10-10 → 2026-10-17 (+7d) |  | 81d → 74d |
| MOD-PWN-PI-203 | Coating / Wrapping for Potable Water Network Zone 2 |  | 2026-10-11 → 2026-10-18 (+7d) |  | 81d → 74d |
| MOD-PWN-PI-213 | Backfilling & Warrning Tape for Potable Water Network Zone 2 |  | 2026-10-11 → 2026-10-18 (+7d) |  | 81d → 74d |
| 2 | **Valve Installation & Chambers** |  | 2026-10-21 → 2026-10-28 (+7d) |  |  |
| MOD-PWN-VC-37 | Valve Chamber Excavation for Potable Water Network Zone 2 |  | 2026-10-10 → 2026-10-17 (+7d) |  | 50.56d → 44.56d |
| MOD-PWN-VC-47 | RC Slab, Walls, or Precast Chambers for Potable Water Network Zone 2 |  | 2026-10-10 → 2026-10-17 (+7d) |  | 60.41d → 54.41d |
| MOD-PWN-VC-7 | Gate Valves (225–710 mm) for Potable Water Network Zone 2 |  | 2026-10-10 → 2026-10-17 (+7d) |  | 60.8d → 54.8d |
| MOD-PWN-VC-17 | Butterfly Valves (355, 500, 630 mm) for Potable Water Network Zone 2 |  | 2026-10-10 → 2026-10-17 (+7d) |  | 60.8d → 54.8d |
| MOD-PWN-VC-27 | 3-exit (2 x 2.5-inch and 1 x 4-inch) dry vacuum cylinder detachable fire nozzle for Potable Water Network Zone 2 |  | 2026-10-10 → 2026-10-17 (+7d) |  | 60.8d → 54.8d |
| MOD-PWN-VC-57 | Fixing Covers, Gratings, Frames for Potable Water Network Zone 2 | 2026-10-10 → 2026-08-05 A (-66d) | 2026-10-17 → 2026-10-24 (+7d) | 0% → 90% | 60.41d → 54.41d |
| MOD-PWN-VC-67 | Tagging & Painting for Potable Water Network Zone 2 | 2026-10-17 → 2026-10-24 (+7d) | 2026-10-21 → 2026-10-28 (+7d) |  | 60.41d → 54.41d |
| 3 | **Flow Meter Installation** |  | 2026-11-25 → 2026-12-02 (+7d) |  |  |
| MOD-PWN-FM-5 | Chamber Excavation (280 mm, 300 mm, 500 mm, 800 mm) for Potable Water Network Zone 2 |  | 2026-10-11 → 2026-10-18 (+7d) |  | 50.56d → 44.56d |
| MOD-PWN-FM-15 | RC or Precast Chamber Construction for Potable Water Network Zone 2 |  | 2026-10-13 → 2026-10-20 (+7d) |  | 50.56d → 44.56d |
| MOD-PWN-FM-25 | Flowmeter Installation & Pipe Integration for Potable Water Network Zone 2 |  | 2026-11-12 → 2026-11-19 (+7d) |  | 31.15d → 25.15d |
| MOD-PWN-FM-35 | Wiring/Cabling if applicable for Potable Water Network Zone 2 | 2026-11-12 → 2026-11-19 (+7d) | 2026-11-22 → 2026-11-29 (+7d) |  | 31.15d → 25.15d |
| MOD-PWN-FM-45 | Calibration & Commissioning for Potable Water Network Zone 2 | 2026-11-22 → 2026-11-29 (+7d) | 2026-11-25 → 2026-12-02 (+7d) |  | 31.15d → 25.15d |
| 4 | **Washout & Air Valve Chambers** |  | 2026-10-17 → 2026-10-24 (+7d) |  |  |
| MOD-PWN-WA-27 | Pipe Work for Potable Water Network Zone 2 |  | 2026-10-11 → 2026-10-18 (+7d) |  | 65d → 59d |
| MOD-PWN-WA-37 | Washout (Valve + Outlet) Installation for Potable Water Network Zone 2 |  | 2026-10-12 → 2026-10-19 (+7d) |  | 65d → 59d |
| MOD-PWN-WA-47 | Air Valve Rooms (Valve + Outlet) Installation for Potable Water Network Zone 2 |  | 2026-10-13 → 2026-10-20 (+7d) |  | 65d → 59d |
| MOD-PWN-WA-57 | Covers, Ladders & Tags for Potable Water Network Zone 2 |  | 2026-10-14 → 2026-10-21 (+7d) |  | 65d → 59d |
| MOD-PWN-WA-67 | Backfilling & Final Finishing for Potable Water Network Zone 2 | 2026-10-14 → 2026-10-21 (+7d) | 2026-10-17 → 2026-10-24 (+7d) |  | 65d → 59d |
| 2 | **Irrigation Network Zone 2** |  | 2026-11-12 → 2026-11-19 (+7d) |  |  |
| 1 | **Excavation, Pipe Laying & Backfilling** |  | 2026-10-12 → 2026-10-19 (+7d) |  |  |
| MOD-IRN-EB-340 | Lean Concrete / Pipe Bedding with Type B Material for Irrigation Network Zone 2 |  | 2026-10-10 → 2026-10-17 (+7d) |  | 80.2d → 73.2d |
| MOD-IRN-EB-350 | HDPE Pipe Laying (125 mm to 630 mm) for Irrigation Network Zone 2 |  | 2026-10-10 → 2026-10-17 (+7d) |  | 80.2d → 73.2d |
| MOD-IRN-EB-360 | Test (Pressure-slope) for Irrigation Network Zone 2 |  | 2026-10-11 → 2026-10-18 (+7d) |  | 80.2d → 73.2d |
| MOD-IRN-EB-370 | Coating / Wrapping for Irrigation Network Zone 2 |  | 2026-10-11 → 2026-10-18 (+7d) |  | 80.2d → 73.2d |
| MOD-IRN-EB-380 | Backfilling & Warrning Tape for Irrigation Network Zone 2 |  | 2026-10-12 → 2026-10-19 (+7d) |  | 80.2d → 73.2d |
| 2 | **Valves and Appurtenances** |  | 2026-10-12 → 2026-10-19 (+7d) |  |  |
| MOD-IRN-VA-5 | Supply & Installation of Valves (Gate Valve) for Irrigation Network Zone 2 |  | 2026-10-10 → 2026-10-17 (+7d) |  | 64.2d → 58.2d |
| MOD-IRN-VA-15 | Supply & Installation of Valves (Butterfly Valve) for Irrigation Network Zone 2 |  | 2026-10-10 → 2026-10-17 (+7d) |  | 64.2d → 58.2d |
| MOD-IRN-VA-25 | Installation of Flanges, Bolts, Collars, Nuts for Irrigation Network Zone 2 |  | 2026-10-11 → 2026-10-18 (+7d) |  | 64.2d → 58.2d |
| MOD-IRN-VA-35 | Valve Pressure Testing for Irrigation Network Zone 2 |  | 2026-10-12 → 2026-10-19 (+7d) |  | 68.4d → 62.4d |
| MOD-IRN-VA-45 | Support Brackets/Anchor Blocks for Irrigation Network Zone 2 |  | 2026-10-12 → 2026-10-19 (+7d) |  | 68.4d → 62.4d |
| 3 | **Valve Rooms** |  | 2026-10-11 → 2026-10-18 (+7d) |  |  |
| MOD-IRN-VR-67 | Backfilling and Finishing Valve Chamber for Irrigation Network Zone 2 |  | 2026-10-11 → 2026-10-18 (+7d) |  | 70d → 64d |
| 4 | **Washout Chambers** |  | 2026-10-11 → 2026-10-18 (+7d) |  |  |
| MOD-IRN-WC-46 | Manhole Frame, Cover & Ladder Fixing Washout Chamber for Irrigation Network Zone 2 |  | 2026-10-10 → 2026-10-17 (+7d) |  | 70.35d → 64.35d |
| MOD-IRN-WC-56 | Backfilling & Reinstatement Washout Chamber for Irrigation Network Zone 2 |  | 2026-10-11 → 2026-10-18 (+7d) |  | 70.35d → 64.35d |
| 6 | **Flow Meter Chambers** |  | 2026-11-12 → 2026-11-19 (+7d) |  |  |
| MOD-IRN-FC-16 | RCC Base & Wall Construction Flow Meter Chamber for Irrigation Network Zone 2 |  | 2026-10-11 → 2026-10-18 (+7d) |  | 64.2d → 58.2d |
| MOD-IRN-FC-26 | Flow Meter Installation (280, 300, 500 mm) Flow Meter Chamber for Irrigation Network Zone 2 |  | 2026-11-05 → 2026-11-12 (+7d) |  | 42.25d → 36.25d |
| MOD-IRN-FC-36 | Integration with Pipework Flow Meter Chamber for Irrigation Network Zone 2 |  | 2026-11-07 → 2026-11-14 (+7d) |  | 42.25d → 36.25d |
| MOD-IRN-FC-46 | Testing & Calibration Flow Meter Chamber for Irrigation Network Zone 2 |  | 2026-11-09 → 2026-11-16 (+7d) |  | 42.25d → 36.25d |
| MOD-IRN-FC-56 | Cover and Access Arrangement Flow Meter Chamber for Irrigation Network Zone 2 | 2026-11-09 → 2026-11-16 (+7d) | 2026-11-12 → 2026-11-19 (+7d) |  | 42.25d → 36.25d |
| MOD-RCP-BW-15 | Place in layers not exceeding 300mm for Rainwater Collection Ponds Zone 2 |  |  | 80% → 90% |  |
| MOD-RCP-BW-25 | Compact each layer to required density for Rainwater Collection Ponds Zone 2 |  |  | 80% → 90% |  |
| MOD-RCP-BW-35 | Conduct field density tests for Rainwater Collection Ponds Zone 2 |  |  | 70% → 90% |  |
| 1 | **Sewerage Network Zone 1** |  | 2027-03-21 → 2027-03-28 (+7d) |  |  |
| 1 | **Pipework: Supply, Installation, and Testing** |  | 2026-10-17 → 2026-10-24 (+7d) |  |  |
| 3 | **HDPE Pressure Pipes Installation (250mm–630mm)** |  | 2026-10-17 → 2026-10-24 (+7d) |  |  |
| MOD-SWN-PW-765 | Excavation and Trenching HDPE for Sewerage Network Zone 1 |  | 2026-10-10 → 2026-10-17 (+7d) |  | 108.1d → 101.1d |
| MOD-SWN-PW-645 | HDPE Pressure Pipes Installation (250mm–630mm) HDPE for Sewerage Network Zone 1 |  | 2026-10-12 → 2026-10-19 (+7d) |  | 108.1d → 101.1d |
| MOD-SWN-PW-795 | Coating / Wrapping HDPE for Sewerage Network Zone 1 |  | 2026-10-13 → 2026-10-20 (+7d) |  | 152.35d → 145.35d |
| MOD-SWN-PW-775 | Lean Concrete / Bedding HDPE for Sewerage Network Zone 1 |  | 2026-10-11 → 2026-10-18 (+7d) |  | 108.1d → 101.1d |
| MOD-SWN-PW-785 | Test (Pressure - Slope) HDPE for Sewerage Network Zone 1 |  | 2026-10-12 → 2026-10-19 (+7d) |  | 152.35d → 145.35d |
| MOD-SWN-PW-755 | Backfilling & Warrning Tape HDPE for Sewerage Network Zone 1 |  | 2026-10-17 → 2026-10-24 (+7d) |  | 152.35d → 145.35d |
| 2 | **Fittings and Valves** | 2026-10-12 → 2026-10-19 (+7d) | 2026-11-12 → 2026-11-19 (+7d) |  |  |
| MOD-SWN-FV-001 | Supply & Installation of HDPE Elbows for Sewerage Network Zone 1 | 2026-10-12 → 2026-10-19 (+7d) | 2026-10-19 → 2026-10-26 (+7d) |  | 93.1d → 87.1d |
| MOD-SWN-FV-002 | Gate Valves Installation for Sewerage Network Zone 1 | 2026-10-19 → 2026-10-26 (+7d) | 2026-10-24 → 2026-10-31 (+7d) |  | 93.1d → 87.1d |
| MOD-SWN-FV-003 | Drain Valves Installation for Sewerage Network Zone 1 | 2026-10-24 → 2026-10-31 (+7d) | 2026-10-28 → 2026-11-04 (+7d) |  | 93.1d → 87.1d |
| MOD-SWN-FV-004 | Air Breather & Air Release Valves Installation for Sewerage Network Zone 1 | 2026-10-28 → 2026-11-04 (+7d) | 2026-11-09 → 2026-11-16 (+7d) |  | 93.1d → 87.1d |
| MOD-SWN-FV-005 | Jointing & Piping Accessories Installation for Sewerage Network Zone 1 | 2026-11-09 → 2026-11-16 (+7d) | 2026-11-12 → 2026-11-19 (+7d) |  | 93.1d → 87.1d |

| ID | Task | Start | Finish | Total float |
| --- | --- | --- | --- | --- |
| 3 | **Valve & Flow Meter Chambers** |  | 2026-12-24 → 2026-12-31 (+7d) |  |
| 1 | **Valve Chambers Construction** |  | 2026-12-06 → 2026-12-13 (+7d) |  |
| MOD-SWN-PW-1135 | Excavation Valve Chamber for Sewerage Network Zone 1 |  | 2026-10-20 → 2026-10-27 (+7d) | 83.7d → 76.7d |
| MOD-SWN-PW-1145 | Lean Concrete / Bedding Valve Chamber for Sewerage Network Zone 1 |  | 2026-11-02 → 2026-11-09 (+7d) | 83.7d → 76.7d |
| MOD-SWN-VF-164 | Valve Chambers Construction Valve Chamber for Sewerage Network Zone 1 |  | 2026-11-06 → 2026-11-13 (+7d) | 83.7d → 76.7d |
| MOD-SWN-PW-1155 | Test Valve Chamber for Sewerage Network Zone 1 | 2026-11-06 → 2026-11-13 (+7d) | 2026-11-21 → 2026-11-28 (+7d) | 102.4d → 95.4d |
| MOD-SWN-PW-1125 | Backfilling Valve Chamber for Sewerage Network Zone 1 | 2026-11-21 → 2026-11-28 (+7d) | 2026-12-06 → 2026-12-13 (+7d) | 102.4d → 95.4d |
| 2 | **Water Drain Chambers Construction** |  | 2026-12-04 → 2026-12-11 (+7d) |  |
| MOD-SWN-PW-1175 | Excavation Water Drain Chamber for Sewerage Network Zone 1 |  | 2026-10-16 → 2026-10-23 (+7d) | 96.3d → 89.3d |
| MOD-SWN-PW-1185 | Lean Concrete / Bedding Water Drain Chamber for Sewerage Network Zone 1 |  | 2026-10-24 → 2026-10-31 (+7d) | 96.3d → 89.3d |
| MOD-SWN-VF-174 | Water Drain Chambers Construction Water Drain Chamber for Sewerage Network Zone 1 |  | 2026-11-13 → 2026-11-20 (+7d) | 83.7d → 76.7d |
| MOD-SWN-PW-1195 | Test Water Drain Chamber for Sewerage Network Zone 1 |  | 2026-11-19 → 2026-11-26 (+7d) | 103.8d → 96.8d |
| MOD-SWN-PW-1165 | Backfilling Water Drain Chamber for Sewerage Network Zone 1 | 2026-11-19 → 2026-11-26 (+7d) | 2026-12-04 → 2026-12-11 (+7d) | 103.8d → 96.8d |
| 3 | **Discharge Chambers Construction** |  | 2026-12-22 → 2026-12-29 (+7d) |  |
| MOD-SWN-PW-1215 | Excavation Discharge Chamber for Sewerage Network Zone 1 |  | 2026-10-20 → 2026-10-27 (+7d) | 95.5d → 88.5d |
| MOD-SWN-PW-1225 | Lean Concrete / Bedding Discharge Chamber for Sewerage Network Zone 1 |  | 2026-11-02 → 2026-11-09 (+7d) | 95.5d → 88.5d |
| MOD-SWN-VF-184 | Discharge Chambers Construction Discharge Chamber for Sewerage Network Zone 1 |  | 2026-11-22 → 2026-11-29 (+7d) | 83.7d → 76.7d |
| MOD-SWN-PW-1235 | Test Discharge Chamber for Sewerage Network Zone 1 | 2026-11-23 → 2026-11-30 (+7d) | 2026-12-07 → 2026-12-14 (+7d) | 85.7d → 78.7d |
| MOD-SWN-PW-1205 | Backfilling Discharge Chamber for Sewerage Network Zone 1 | 2026-12-08 → 2026-12-15 (+7d) | 2026-12-22 → 2026-12-29 (+7d) | 85.7d → 78.7d |
| 4 | **Flow Meter Chambers Construction** |  | 2026-12-24 → 2026-12-31 (+7d) |  |
| MOD-SWN-PW-1255 | Excavation Flow Meter Chamber for Sewerage Network Zone 1 |  | 2026-10-17 → 2026-10-24 (+7d) | 111.53d → 104.53d |
| MOD-SWN-PW-1265 | Lean Concrete / Bedding Flow Meter Chamber for Sewerage Network Zone 1 |  | 2026-10-26 → 2026-11-02 (+7d) | 111.53d → 104.53d |
| MOD-SWN-VF-194 | Flow Meter Chambers Construction Flow Meter Chamber for Sewerage Network Zone 1 |  | 2026-11-24 → 2026-12-01 (+7d) | 83.7d → 76.7d |
| MOD-SWN-PW-1275 | Test Flow Meter Chamber for Sewerage Network Zone 1 | 2026-11-25 → 2026-12-02 (+7d) | 2026-12-09 → 2026-12-16 (+7d) | 83.7d → 76.7d |
| MOD-SWN-PW-1245 | Backfilling Flow Meter Chamber for Sewerage Network Zone 1 | 2026-12-10 → 2026-12-17 (+7d) | 2026-12-24 → 2026-12-31 (+7d) | 83.7d → 76.7d |
| 4 | **Manholes** |  | 2026-10-31 → 2026-11-07 (+7d) |  |
| 1 | **1200mm GRP Manholes with Backdrop** |  | 2026-10-31 → 2026-11-07 (+7d) |  |
| MOD-SWN-PW-1295 | Excavation 1.2m GRP for Sewerage Network Zone 1 |  | 2026-10-10 → 2026-10-17 (+7d) | 137.82d → 130.82d |
| MOD-SWN-PW-1305 | Lean Concrete / Bedding 1.2m GRP for Sewerage Network Zone 1 |  | 2026-10-10 → 2026-10-17 (+7d) | 137.82d → 130.82d |
| MOD-SWN-MH-105 | 1200mm GRP Manholes with Backdrop 1.2m GRP for Sewerage Network Zone 1 |  | 2026-10-11 → 2026-10-18 (+7d) | 137.82d → 130.82d |
| MOD-SWN-PW-1315 | Test 1.2m GRP for Sewerage Network Zone 1 | 2026-10-11 → 2026-10-18 (+7d) | 2026-10-16 → 2026-10-23 (+7d) | 137.82d → 130.82d |
| MOD-SWN-PW-1285 | Backfilling 1.2m GRP for Sewerage Network Zone 1 | 2026-10-16 → 2026-10-23 (+7d) | 2026-10-31 → 2026-11-07 (+7d) | 137.82d → 130.82d |
| 2 | **1500mm GRP Manholes (Standard & Backdrop)** |  | 2026-10-31 → 2026-11-07 (+7d) |  |
| MOD-SWN-PW-1335 | Excavation 1.5m GRP for Sewerage Network Zone 1 |  | 2026-10-10 → 2026-10-17 (+7d) | 137.82d → 130.82d |
| MOD-SWN-PW-1345 | Lean Concrete / Bedding 1.5m GRP for Sewerage Network Zone 1 |  | 2026-10-10 → 2026-10-17 (+7d) | 137.82d → 130.82d |
| MOD-SWN-MH-115 | 1500mm GRP Manholes (Standard & Backdrop) 1.5m GRP for Sewerage Network Zone 1 |  | 2026-10-11 → 2026-10-18 (+7d) | 137.82d → 130.82d |
| MOD-SWN-PW-1355 | Test 1.5m GRP for Sewerage Network Zone 1 | 2026-10-11 → 2026-10-18 (+7d) | 2026-10-16 → 2026-10-23 (+7d) | 137.82d → 130.82d |
| MOD-SWN-PW-1325 | Backfilling 1.5m GRP for Sewerage Network Zone 1 | 2026-10-16 → 2026-10-23 (+7d) | 2026-10-31 → 2026-11-07 (+7d) | 137.82d → 130.82d |
| 3 | **1800mm GRP Manholes (Standard & Backdrop)** |  | 2026-10-31 → 2026-11-07 (+7d) |  |
| MOD-SWN-PW-1375 | Excavation 1.8m GRP for Sewerage Network Zone 1 |  | 2026-10-10 → 2026-10-17 (+7d) | 137.82d → 130.82d |
| MOD-SWN-PW-1385 | Lean Concrete / Bedding 1.8m GRP for Sewerage Network Zone 1 |  | 2026-10-10 → 2026-10-17 (+7d) | 137.82d → 130.82d |
| MOD-SWN-MH-125 | 1800mm GRP Manholes (Standard & Backdrop) 1.8m GRP for Sewerage Network Zone 1 |  | 2026-10-11 → 2026-10-18 (+7d) | 137.82d → 130.82d |
| MOD-SWN-PW-1395 | Test 1.8m GRP for Sewerage Network Zone 1 | 2026-10-11 → 2026-10-18 (+7d) | 2026-10-16 → 2026-10-23 (+7d) | 138.02d → 131.02d |
| MOD-SWN-PW-1365 | Backfilling 1.8m GRP for Sewerage Network Zone 1 | 2026-10-16 → 2026-10-23 (+7d) | 2026-10-31 → 2026-11-07 (+7d) | 138.02d → 131.02d |
| 4 | **2000mm GRP Manholes (Standard & Backdrop)** |  | 2026-10-31 → 2026-11-07 (+7d) |  |
| MOD-SWN-PW-1415 | Excavation 2m GRP for Sewerage Network Zone 1 |  | 2026-10-10 → 2026-10-17 (+7d) | 137.82d → 130.82d |
| MOD-SWN-PW-1425 | Lean Concrete / Bedding 2m GRP for Sewerage Network Zone 1 |  | 2026-10-10 → 2026-10-17 (+7d) | 137.82d → 130.82d |
| MOD-SWN-MH-135 | 2000mm GRP Manholes (Standard & Backdrop) 2m GRP for Sewerage Network Zone 1 |  | 2026-10-11 → 2026-10-18 (+7d) | 137.82d → 130.82d |
| MOD-SWN-PW-1435 | Test 2m GRP for Sewerage Network Zone 1 | 2026-10-11 → 2026-10-18 (+7d) | 2026-10-16 → 2026-10-23 (+7d) | 137.82d → 130.82d |
| MOD-SWN-PW-1405 | Backfilling 2m GRP for Sewerage Network Zone 1 | 2026-10-16 → 2026-10-23 (+7d) | 2026-10-31 → 2026-11-07 (+7d) | 137.82d → 130.82d |
| 5 | **Pumping Stations** |  | 2027-03-21 → 2027-03-28 (+7d) |  |
| 9 | **Perimeter Walls & Gates** |  | 2026-10-14 → 2026-10-21 (+7d) |  |
| MOD-SWN-PS-049 | Main entrance gates – Each PS for Sewerage Network Zone 1 |  | 2026-10-14 → 2026-10-21 (+7d) | 20.6d → 14.6d |
| MOD-SWN-PS-050 | Personal entrance gate – Each PS for Sewerage Network Zone 1 |  | 2026-10-11 → 2026-10-18 (+7d) | 20.6d → 14.6d |
| 1 | **Sewage Pumps and MCC System** | 2026-11-05 → 2026-11-12 (+7d) | 2026-12-27 → 2027-01-03 (+7d) |  |
| MOD-SWN-PS-002 | Sewage pumps incl. MCC, control panel, flow meters, transducers, switches, GRP piping, testing & installation – PS1 for | 2026-11-05 → 2026-11-12 (+7d) | 2026-11-18 → 2026-11-25 (+7d) | 51.35d → 45.35d |
| MOD-SWN-PS-003 | Sewage pumps (2x86 l/s, 1x325 l/s) incl. MCC – PS1 for Sewerage Network Zone 1 | 2026-11-18 → 2026-11-25 (+7d) | 2026-12-02 → 2026-12-09 (+7d) | 51.35d → 45.35d |
| MOD-SWN-PS-004 | Sewage pumps (2x55 l/s) incl. MCC – PS2 for Sewerage Network Zone 1 | 2026-12-02 → 2026-12-09 (+7d) | 2026-12-27 → 2027-01-03 (+7d) | 51.35d → 45.35d |
| 2 | **Odor Control System** | 2026-12-07 → 2026-12-14 (+7d) | 2027-01-05 → 2027-01-12 (+7d) |  |
| MOD-SWN-PS-0081 | Odor control system – All stations (PS1) for Sewerage Network Zone 1 | 2026-12-07 → 2026-12-14 (+7d) | 2026-12-19 → 2026-12-26 (+7d) | -5.21d → -11.21d |
| MOD-SWN-PS-0082 | Odor control system – All stations (PS2) for Sewerage Network Zone 1 | 2026-12-19 → 2026-12-26 (+7d) | 2027-01-05 → 2027-01-12 (+7d) | 42.79d → 36.79d |
| 3 | **In-Line Booster Stations** | 2026-12-19 → 2026-12-26 (+7d) | 2027-03-21 → 2027-03-28 (+7d) |  |
| MOD-SWN-PS-010 | In-Line Booster Stations - Civil Works for Sewerage Network Zone 1 | 2026-12-19 → 2026-12-26 (+7d) | 2027-01-12 → 2027-01-19 (+7d) | -5.21d → -11.21d |
| MOD-SWN-PS-1164 | In-Line Booster Stations - Mechanical Works for Sewerage Network Zone 1 | 2027-01-12 → 2027-01-19 (+7d) | 2027-02-06 → 2027-02-17 (+11d) | -5.21d → -11.21d |
| MOD-SWN-PS-1174 | In-Line Booster Stations - Electrical Works for Sewerage Network Zone 1 | 2027-02-06 → 2027-02-17 (+11d) | 2027-03-21 → 2027-03-28 (+7d) | -5.21d → -11.21d |
| 7 | **Engine/Motor Control Center Buildings** | 2026-10-10 → 2026-10-17 (+7d) | 2026-10-18 → 2026-10-25 (+7d) |  |
| MOD-SWN-PS-038 | MCC Building – PS1 for Sewerage Network Zone 1 | 2026-10-10 → 2026-10-17 (+7d) | 2026-10-10 → 2026-10-17 (+7d) | 55.6d → 49.6d |
| MOD-SWN-PS-039 | MCC Building – PS2 for Sewerage Network Zone 1 | 2026-10-11 → 2026-10-18 (+7d) | 2026-10-18 → 2026-10-25 (+7d) | 79.6d → 73.6d |
| 4 | **Valves and Fittings (General Supply & Installation)** | 2026-11-05 → 2026-11-12 (+7d) | 2026-11-11 → 2026-11-18 (+7d) |  |
| MOD-SWN-PS-012 | Valves, fittings & accessories – PS1 for Sewerage Network Zone 1 | 2026-11-05 → 2026-11-12 (+7d) | 2026-11-08 → 2026-11-15 (+7d) | 90.35d → 84.35d |

| ID | Task | Start | Finish | Total float |
| --- | --- | --- | --- | --- |
| MOD-SWN-PS-013 | 35mm raked bar SS 316 mesh – PS1 for Sewerage Network Zone 1 | 2026-11-08 → 2026-11-15 (+7d) | 2026-11-09 → 2026-11-16 (+7d) | 90.35d → 84.35d |
| MOD-SWN-PS-014 | Valves, fittings, flow meters – PS2 for Sewerage Network Zone 1 | 2026-11-09 → 2026-11-16 (+7d) | 2026-11-11 → 2026-11-18 (+7d) | 90.35d → 84.35d |
| 5 | **Tank with Canopy** | 2027-01-12 → 2027-01-19 (+7d) | 2027-01-27 → 2027-02-03 (+7d) |  |
| MOD-SWN-PS-019 | Tank with canopy (per specs/drawings) - PS1 for Sewerage Network Zone 1 | 2027-01-12 → 2027-01-19 (+7d) | 2027-01-27 → 2027-02-03 (+7d) | 23.79d → 17.79d |
| 6 | **Pump Well and Valve Chambers** | 2026-10-11 → 2026-10-18 (+7d) | 2026-12-21 → 2026-12-28 (+7d) |  |
| MOD-SWN-PS-022 | Pump well & valve chamber structure – PS1 (2 wells, 12m deep) for Sewerage Network Zone 1 | 2026-10-11 → 2026-10-18 (+7d) | 2026-10-25 → 2026-11-01 (+7d) | 55.6d → 49.6d |
| MOD-SWN-PS-023 | Concrete wall (5x5x1m) inside PS1 well for Sewerage Network Zone 1 | 2026-10-26 → 2026-11-02 (+7d) | 2026-11-02 → 2026-11-09 (+7d) | 55.6d → 49.6d |
| MOD-SWN-PS-027 | Pump well & valve chamber structure – PS2 (2 wells, 3m each, 9m depth) for Sewerage Network Zone 1 | 2026-10-26 → 2026-11-02 (+7d) | 2026-11-10 → 2026-11-17 (+7d) | 59.6d → 53.6d |
| MOD-SWN-PS-024 | 35 mm raked bar SS 316 network chamber PS1 for Sewerage Network Zone 1 | 2026-11-03 → 2026-11-10 (+7d) | 2026-11-03 → 2026-11-10 (+7d) | 55.6d → 49.6d |
| MOD-SWN-PS-025 | Valve chamber – PS1 for Sewerage Network Zone 1 | 2026-11-04 → 2026-11-11 (+7d) | 2026-11-10 → 2026-11-17 (+7d) | 55.6d → 49.6d |
| MOD-SWN-PS-026 | Flow meter chamber – PS1 for Sewerage Network Zone 1 | 2026-11-11 → 2026-11-18 (+7d) | 2026-11-15 → 2026-11-22 (+7d) | 55.6d → 49.6d |
| MOD-SWN-PS-028 | Valve chamber – PS2 for Sewerage Network Zone 1 | 2026-11-16 → 2026-11-23 (+7d) | 2026-12-03 → 2026-12-10 (+7d) | 55.6d → 49.6d |
| MOD-SWN-PS-029 | Flow meter chamber – PS2 for Sewerage Network Zone 1 | 2026-12-05 → 2026-12-12 (+7d) | 2026-12-21 → 2026-12-28 (+7d) | 55.6d → 49.6d |
| 8 | **Odor Control System Base/Plinth** | 2026-11-01 → 2026-11-08 (+7d) | 2026-11-07 → 2026-11-14 (+7d) |  |
| MOD-SWN-PS-043 | Concrete plinth below odor control – All PSs for Sewerage Network Zone 1 | 2026-11-01 → 2026-11-08 (+7d) | 2026-11-07 → 2026-11-14 (+7d) | 20.6d → 14.6d |
| 10 | **Lighting Works** |  | 2026-11-05 → 2026-11-12 (+7d) |  |
| MOD-SWN-PS-052 | 250W Flood Light installation – Each PS for Sewerage Network Zone 1 |  | 2026-11-05 → 2026-11-12 (+7d) | 95d → 89d |
| 11 | **Duct Works** | 2026-10-26 → 2026-11-02 (+7d) | 2026-11-02 → 2026-11-09 (+7d) |  |
| MOD-SWN-PS-054 | uPVC duct Track 1 – All PSs for Sewerage Network Zone 1 | 2026-10-26 → 2026-11-02 (+7d) | 2026-10-26 → 2026-11-02 (+7d) | 94.6d → 88.6d |
| MOD-SWN-PS-055 | uPVC duct Track 2 – All PSs for Sewerage Network Zone 1 | 2026-10-27 → 2026-11-03 (+7d) | 2026-10-28 → 2026-11-04 (+7d) | 94.6d → 88.6d |
| MOD-SWN-PS-056 | uPVC duct Track 8 – All PSs for Sewerage Network Zone 1 | 2026-10-29 → 2026-11-05 (+7d) | 2026-11-02 → 2026-11-09 (+7d) | 94.6d → 88.6d |
| 12 | **Grounding Works** | 2026-11-03 → 2026-11-10 (+7d) | 2026-11-05 → 2026-11-12 (+7d) |  |
| MOD-SWN-PS-058 | Grounding pit – Each PS for Sewerage Network Zone 1 | 2026-11-03 → 2026-11-10 (+7d) | 2026-11-03 → 2026-11-10 (+7d) | 94.6d → 88.6d |
| MOD-SWN-PS-059 | 600x600 Cable pull pit – All PSs for Sewerage Network Zone 1 | 2026-11-04 → 2026-11-11 (+7d) | 2026-11-05 → 2026-11-12 (+7d) | 94.6d → 88.6d |
| 13 | **Landscaping / Interlocking Tiles** | 2026-10-12 → 2026-10-19 (+7d) | 2026-11-04 → 2026-11-11 (+7d) |  |
| MOD-SWN-PS-061 | Building perimeter interlock tiles for Sewerage Network Zone 1 | 2026-10-12 → 2026-10-19 (+7d) | 2026-10-31 → 2026-11-07 (+7d) | 20.6d → 14.6d |
| MOD-SWN-PS-062 | Entrance road paving tiles for Sewerage Network Zone 1 | 2026-11-01 → 2026-11-08 (+7d) | 2026-11-04 → 2026-11-11 (+7d) | 95.6d → 89.6d |
| 14 | **Pumping Station Internal Drainage Network** | 2026-10-10 → 2026-10-17 (+7d) | 2026-10-17 → 2026-10-24 (+7d) |  |
| MOD-SWN-PS-064 | Internal surface drainage channels for Sewerage Network Zone 1 | 2026-10-10 → 2026-10-17 (+7d) | 2026-10-17 → 2026-10-24 (+7d) | 111.6d → 105.6d |
| 12 | **Rainwater Drainage Network Zone 1** |  | 2026-11-09 → 2026-11-16 (+7d) |  |
| 1 | **Pipe Laying Works** |  | 2026-10-18 → 2026-10-25 (+7d) |  |
| 2 | **Supply & Installation of uPVC Pipes (250–300mm dia)** |  | 2026-10-13 → 2026-10-20 (+7d) |  |
| MOD-RWN-PL-913 | Excavation to required depth UPVC for Rainwater Drainage Network Zone 1 |  | 2026-10-11 → 2026-10-18 (+7d) | -83.25d → -90.25d |
| MOD-RWN-PL-923 | Lean Concrete / Bedding UPVC for Rainwater Drainage Network Zone 1 |  | 2026-10-11 → 2026-10-18 (+7d) | -83.25d → -90.25d |
| MOD-RWN-PL-933 | Laying of uPVC pipe UPVC for Rainwater Drainage Network Zone 1 |  | 2026-10-12 → 2026-10-19 (+7d) | -83.25d → -90.25d |
| MOD-RWN-PL-953 | Test (Pressure-slope) UPVC for Rainwater Drainage Network Zone 1 |  | 2026-10-12 → 2026-10-19 (+7d) | -83.25d → -90.25d |
| MOD-RWN-PL-943 | Coating / Wrapping UPVC for Rainwater Drainage Network Zone 1 |  | 2026-10-12 → 2026-10-19 (+7d) | -77.81d → -84.81d |
| MOD-RWN-PL-963 | Backfilling & Warning Tape UPVC for Rainwater Drainage Network Zone 1 |  | 2026-10-13 → 2026-10-20 (+7d) | -78.81d → -85.81d |
| 4 | **uPVC Connection Pipes (150mm dia)** |  | 2026-10-18 → 2026-10-25 (+7d) |  |
| MOD-RWN-PL-1043 | Lay & connect UPVC Con. for Rainwater Drainage Network Zone 1 |  | 2026-10-12 → 2026-10-19 (+7d) | -83.25d → -90.25d |
| MOD-RWN-PL-1053 | Test (Pressure-slope) UPVC Con. for Rainwater Drainage Network Zone 1 |  | 2026-10-13 → 2026-10-20 (+7d) | -83.25d → -90.25d |
| MOD-RWN-PL-1083 | Coating / Wrapping UPVC Con. for Rainwater Drainage Network Zone 1 |  | 2026-10-17 → 2026-10-24 (+7d) | -83.25d → -90.25d |
| MOD-RWN-PL-1063 | Backfilling & compaction UPVC Con. for Rainwater Drainage Network Zone 1 |  | 2026-10-18 → 2026-10-25 (+7d) | -83.25d → -90.25d |
| 5 | **Precast Concrete Box Culverts** |  | 2026-11-08 → 2026-11-15 (+7d) |  |
| 1 | **Box Culverts (500x500mm to 3500x800mm)** |  | 2026-11-03 → 2026-11-10 (+7d) |  |
| MOD-RWN-PC-003 | Excavation to required depth Box culvert for Rainwater Drainage Network Zone 1 |  | 2026-10-10 → 2026-10-17 (+7d) | -89.51d → -95.51d |
| MOD-RWN-PC-004 | Dewatering and trench shoring Box culvert for Rainwater Drainage Network Zone 1 |  | 2026-10-11 → 2026-10-18 (+7d) | -89.51d → -95.51d |
| MOD-RWN-PC-005 | Bedding preparation (gravel/lean concrete) Box culvert for Rainwater Drainage Network Zone 1 |  | 2026-10-12 → 2026-10-19 (+7d) | -89.51d → -95.51d |
| MOD-RWN-PC-006 | Installation of box culvert units Box culvert for Rainwater Drainage Network Zone 1 |  | 2026-10-17 → 2026-10-24 (+7d) | -89.51d → -95.51d |
| MOD-RWN-PC-007 | Alignment and joint sealing Box culvert for Rainwater Drainage Network Zone 1 |  | 2026-10-19 → 2026-10-26 (+7d) | -84.31d → -90.31d |
| MOD-RWN-PC-008 | Construct headwalls/wing walls (if needed) Box culvert for Rainwater Drainage Network Zone 1 | 2026-10-19 → 2026-10-26 (+7d) | 2026-10-25 → 2026-11-01 (+7d) | -84.31d → -90.31d |
| MOD-RWN-PC-009 | Backfilling and compaction Box culvert for Rainwater Drainage Network Zone 1 | 2026-10-25 → 2026-11-01 (+7d) | 2026-10-31 → 2026-11-07 (+7d) | -84.31d → -90.31d |
| MOD-RWN-PC-010 | Surface finishing Box culvert for Rainwater Drainage Network Zone 1 | 2026-10-31 → 2026-11-07 (+7d) | 2026-11-03 → 2026-11-10 (+7d) | -84.31d → -90.31d |
| 2 | **Tube Culverts at Road Intersections** |  | 2026-10-28 → 2026-11-04 (+7d) |  |
| MOD-RWN-PC-014 | Pipe bedding and twin pipe alignment Tube culvert for Rainwater Drainage Network Zone 1 |  | 2026-10-13 → 2026-10-20 (+7d) | -79.81d → -85.81d |
| MOD-RWN-PC-015 | Pipe laying and jointing Tube culvert for Rainwater Drainage Network Zone 1 |  | 2026-10-19 → 2026-10-26 (+7d) | -79.81d → -85.81d |
| MOD-RWN-PC-016 | Backfilling and road reinstatement Tube culvert for Rainwater Drainage Network Zone 1 | 2026-10-19 → 2026-10-26 (+7d) | 2026-10-28 → 2026-11-04 (+7d) | -79.81d → -85.81d |
| 3 | **Box Culverts at Road Intersections** |  | 2026-11-08 → 2026-11-15 (+7d) |  |
| MOD-RWN-PC-019 | Deep trench excavation with shoring for Rainwater Drainage Network Zone 1 |  | 2026-10-10 → 2026-10-17 (+7d) | -88.74d → -94.74d |
| MOD-RWN-PC-020 | Place bedding material for Rainwater Drainage Network Zone 1 |  | 2026-10-11 → 2026-10-18 (+7d) | -88.74d → -94.74d |
| MOD-RWN-PC-021 | Install precast box culvert for Rainwater Drainage Network Zone 1 | 2026-10-11 → 2026-10-18 (+7d) | 2026-10-15 → 2026-10-22 (+7d) | -88.74d → -94.74d |
| MOD-RWN-PC-022 | Construct connection chambers (if needed) for Rainwater Drainage Network Zone 1 | 2026-10-15 → 2026-10-22 (+7d) | 2026-10-17 → 2026-10-24 (+7d) | -88.74d → -94.74d |
| MOD-RWN-PC-023 | Joint treatment and testing for Rainwater Drainage Network Zone 1 | 2026-10-17 → 2026-10-24 (+7d) | 2026-10-28 → 2026-11-04 (+7d) | -88.74d → -94.74d |
| MOD-RWN-PC-024 | Backfilling and surface reinstatement for Rainwater Drainage Network Zone 1 | 2026-10-28 → 2026-11-04 (+7d) | 2026-11-08 → 2026-11-15 (+7d) | -88.74d → -94.74d |
| 4 | **Manholes** |  | 2026-11-09 → 2026-11-16 (+7d) |  |
| 1 | **Circular GRP Manholes (1200–1800mm dia)** |  | 2026-10-31 → 2026-11-07 (+7d) |  |
| MOD-RWN-MH-003 | Dewatering and safety barriers Circular Manhole for Rainwater Drainage Network Zone 1 |  | 2026-10-15 → 2026-10-22 (+7d) | -81.16d → -87.16d |
| MOD-RWN-MH-004 | Concrete base construction Circular Manhole for Rainwater Drainage Network Zone 1 |  | 2026-10-17 → 2026-10-24 (+7d) | -81.16d → -87.16d |
| MOD-RWN-MH-005 | Install GRP manhole shaft sections Circular Manhole for Rainwater Drainage Network Zone 1 |  | 2026-10-22 → 2026-10-29 (+7d) | -81.16d → -87.16d |
| MOD-RWN-MH-006 | Place slab and cover frame Circular Manhole for Rainwater Drainage Network Zone 1 |  | 2026-10-25 → 2026-11-01 (+7d) | -81.16d → -87.16d |

| ID | Task | Start | Finish | Complete | Total float |
| --- | --- | --- | --- | --- | --- |
| MOD-RWN-MH-007 | Waterproofing Circular Manhole for Rainwater Drainage Network Zone 1 |  | 2026-10-28 → 2026-11-04 (+7d) |  | -81.16d → -87.16d |
| MOD-RWN-MH-008 | Backfilling and compaction Circular Manhole for Rainwater Drainage Network Zone 1 |  | 2026-10-31 → 2026-11-07 (+7d) |  | -81.16d → -87.16d |
| 3 | **Concrete Manholes for 1500x1500 Box Pipes** |  | 2026-11-02 → 2026-11-09 (+7d) |  |  |
| MOD-RWN-MH-019 | Base slab and wall shuttering Concrete Manhole 1.5x1.5 for Rainwater Drainage Network Zone 1 |  | 2026-10-15 → 2026-10-22 (+7d) |  | -83.86d → -89.86d |
| MOD-RWN-MH-020 | Wall reinforcement and casting Concrete Manhole 1.5x1.5 for Rainwater Drainage Network Zone 1 |  | 2026-10-18 → 2026-10-25 (+7d) |  | -83.86d → -89.86d |
| MOD-RWN-MH-021 | Roof slab with openings Concrete Manhole 1.5x1.5 for Rainwater Drainage Network Zone 1 |  | 2026-10-19 → 2026-10-26 (+7d) |  | -83.86d → -89.86d |
| MOD-RWN-MH-022 | Masonry/benching works inside Concrete Manhole 1.5x1.5 for Rainwater Drainage Network Zone 1 |  | 2026-10-21 → 2026-10-28 (+7d) |  | -83.86d → -89.86d |
| MOD-RWN-MH-023 | Install cover and frame Concrete Manhole 1.5x1.5 for Rainwater Drainage Network Zone 1 |  | 2026-10-27 → 2026-11-03 (+7d) |  | -83.86d → -89.86d |
| MOD-RWN-MH-024 | Backfill in layers Concrete Manhole 1.5x1.5 for Rainwater Drainage Network Zone 1 | 2026-10-27 → 2026-11-03 (+7d) | 2026-11-02 → 2026-11-09 (+7d) |  | -83.86d → -89.86d |
| 2 | **Concrete Manholes for 1000x1000 Box Pipes** |  | 2026-11-09 → 2026-11-16 (+7d) |  |  |
| MOD-RWN-MH-010 | Excavation Concrete Manhole 1x1 for Rainwater Drainage Network Zone 1 |  | 2026-10-15 → 2026-10-22 (+7d) |  | -89.51d → -95.51d |
| MOD-RWN-MH-011 | Base slab and wall shuttering Concrete Manhole 1x1 for Rainwater Drainage Network Zone 1 |  | 2026-10-17 → 2026-10-24 (+7d) |  | -89.51d → -95.51d |
| MOD-RWN-MH-012 | Wall reinforcement and casting Concrete Manhole 1x1 for Rainwater Drainage Network Zone 1 |  | 2026-10-20 → 2026-10-27 (+7d) |  | -89.51d → -95.51d |
| MOD-RWN-MH-013 | Roof slab with openings Concrete Manhole 1x1 for Rainwater Drainage Network Zone 1 |  | 2026-10-25 → 2026-11-01 (+7d) |  | -89.51d → -95.51d |
| MOD-RWN-MH-014 | Masonry/benching works inside Concrete Manhole 1x1 for Rainwater Drainage Network Zone 1 |  | 2026-11-01 → 2026-11-08 (+7d) |  | -89.51d → -95.51d |
| MOD-RWN-MH-015 | Install cover and frame Concrete Manhole 1x1 for Rainwater Drainage Network Zone 1 | 2026-11-01 → 2026-11-08 (+7d) | 2026-11-05 → 2026-11-12 (+7d) |  | -89.51d → -95.51d |
| MOD-RWN-MH-016 | Backfill in layers Concrete Manhole 1x1 for Rainwater Drainage Network Zone 1 | 2026-11-05 → 2026-11-12 (+7d) | 2026-11-09 → 2026-11-16 (+7d) |  | -89.51d → -95.51d |
| 2 | **Chambers and Catch Basins** |  | 2026-10-17 → 2026-10-24 (+7d) |  |  |
| 2 | **Rainwater Catch Basins** |  | 2026-10-17 → 2026-10-24 (+7d) |  |  |
| MOD-RWN-CC-012 | Backfill and surface finish Catch Basin for Rainwater Drainage Network Zone 1 |  | 2026-10-17 → 2026-10-24 (+7d) |  | -69.39d → -75.39d |
| 3 | **Gully Outfalls to Swales** |  | 2026-10-20 → 2026-10-27 (+7d) |  |  |
| 1 | **Gully Outfalls to Swales** |  | 2026-10-18 → 2026-10-25 (+7d) |  |  |
| MOD-RWN-GO-004 | Place concrete apron or pipes Gully Outfall to Swales for Rainwater Drainage Network Zone 1 |  | 2026-10-17 → 2026-10-24 (+7d) |  | -70.64d → -76.64d |
| MOD-RWN-GO-005 | Provide slope protection (riprap) Gully Outfall to Swales for Rainwater Drainage Network Zone 1 |  | 2026-10-17 → 2026-10-24 (+7d) |  | -70.64d → -76.64d |
| MOD-RWN-GO-006 | Compact and shape terrain Gully Outfall to Swales for Rainwater Drainage Network Zone 1 |  | 2026-10-18 → 2026-10-25 (+7d) |  | -70.64d → -76.64d |
| 2 | **Riprap Works & Protection** |  | 2026-10-20 → 2026-10-27 (+7d) |  |  |
| MOD-RWN-GO-008 | Lay filter fabric/membrane for Rainwater Drainage Network Zone 1 |  | 2026-10-17 → 2026-10-24 (+7d) |  | -73.03d → -79.03d |
| MOD-RWN-GO-009 | Place riprap/stone layer for Rainwater Drainage Network Zone 1 |  | 2026-10-19 → 2026-10-26 (+7d) |  | -73.03d → -79.03d |
| MOD-RWN-GO-010 | Compact edges for Rainwater Drainage Network Zone 1 |  | 2026-10-20 → 2026-10-27 (+7d) |  | -73.03d → -79.03d |
| 6 | **Backfilling & Bedding** |  | 2026-10-26 → 2026-11-02 (+7d) |  |  |
| 1 | **Backfilling Materials (Type A – 201–700mm Pipes)** |  | 2026-10-20 → 2026-10-27 (+7d) |  |  |
| MOD-RWN-BB-002 | Place granular bedding under pipe for Rainwater Drainage Network Zone 1 |  | 2026-10-10 → 2026-10-17 (+7d) |  | -83.71d → -89.71d |
| MOD-RWN-BB-003 | Lay and align pipe for Rainwater Drainage Network Zone 1 |  | 2026-10-11 → 2026-10-18 (+7d) |  | -72.45d → -78.45d |
| MOD-RWN-BB-004 | Backfill up to spring line for Rainwater Drainage Network Zone 1 |  | 2026-10-11 → 2026-10-18 (+7d) |  | -72.45d → -78.45d |
| MOD-RWN-BB-005 | Compact layer-wise for Rainwater Drainage Network Zone 1 |  | 2026-10-11 → 2026-10-18 (+7d) |  | -72.45d → -78.45d |
| MOD-RWN-BB-006 | Final fill to subgrade level for Rainwater Drainage Network Zone 1 | 2026-10-13 → 2026-10-20 (+7d) | 2026-10-20 → 2026-10-27 (+7d) |  | -72.45d → -78.45d |
| 2 | **Gravel Bedding & Filter Cloth for uPVC Drain Pipes** |  | 2026-10-26 → 2026-11-02 (+7d) |  |  |
| MOD-RWN-BB-008 | Line trench with filter cloth for Rainwater Drainage Network Zone 1 |  | 2026-10-10 → 2026-10-17 (+7d) |  | -78d → -84d |
| MOD-RWN-BB-009 | Place and compact gravel bedding for Rainwater Drainage Network Zone 1 |  | 2026-10-10 → 2026-10-17 (+7d) |  | -78d → -84d |
| MOD-RWN-BB-010 | Lay pipe within gravel zone for Rainwater Drainage Network Zone 1 |  | 2026-10-10 → 2026-10-17 (+7d) |  | -78d → -84d |
| MOD-RWN-BB-011 | Wrap filter cloth above pipe for Rainwater Drainage Network Zone 1 |  | 2026-10-12 → 2026-10-19 (+7d) |  | -78d → -84d |
| MOD-RWN-BB-012 | Final fill and trench restoration for Rainwater Drainage Network Zone 1 | 2026-10-12 → 2026-10-19 (+7d) | 2026-10-26 → 2026-11-02 (+7d) |  | -78d → -84d |
| 13 | **Potable Water Network Zone 1** |  | 2026-11-26 → 2026-12-03 (+7d) |  |  |
| 1 | **Pipe Installation Works** |  | 2026-10-11 → 2026-10-18 (+7d) |  |  |
| MOD-PWN-PI-383 | Lean Concrete / Pipe Bedding Preparation for Potable Water Network Zone 1 |  | 2026-10-10 → 2026-10-17 (+7d) |  | 80.63d → 73.63d |
| MOD-PWN-PI-393 | HDPE Pipe Laying (200 mm to 710 mm) for Potable Water Network Zone 1 |  | 2026-10-10 → 2026-10-17 (+7d) |  | 80.63d → 73.63d |
| MOD-PWN-PI-413 | Coating / Wrapping for Potable Water Network Zone 1 |  | 2026-10-11 → 2026-10-18 (+7d) |  | 80.63d → 73.63d |
| MOD-PWN-PI-403 | Test (Pressure-slope) for Potable Water Network Zone 1 |  | 2026-10-10 → 2026-10-17 (+7d) |  | 80.63d → 73.63d |
| MOD-PWN-PI-423 | Backfilling & Warrning Tape for Potable Water Network Zone 1 |  | 2026-10-11 → 2026-10-18 (+7d) |  | 80.63d → 73.63d |
| 2 | **Valve Installation & Chambers** |  | 2026-10-13 → 2026-10-20 (+7d) |  |  |
| MOD-PWN-VC-004 | Valve Chamber Excavation for Potable Water Network Zone 1 |  | 2026-10-10 → 2026-10-17 (+7d) |  | 49.7d → 43.7d |
| MOD-PWN-VC-005 | RC Slab, Walls, or Precast Chambers for Potable Water Network Zone 1 |  | 2026-10-10 → 2026-10-17 (+7d) |  | 68.17d → 62.17d |
| MOD-PWN-VC-001 | Gate Valves (225–710 mm) for Potable Water Network Zone 1 |  | 2026-10-10 → 2026-10-17 (+7d) |  | 68d → 62d |
| MOD-PWN-VC-003 | 3-exit (2 x 2.5-inch and 1 x 4-inch) dry vacuum cylinder detachable fire nozzle for Potable Water Network Zone 1 |  | 2026-10-10 → 2026-10-17 (+7d) |  | 68d → 62d |
| MOD-PWN-VC-002 | Butterfly Valves (355, 500, 630 mm) for Potable Water Network Zone 1 |  | 2026-10-10 → 2026-10-17 (+7d) |  | 68d → 62d |
| MOD-PWN-VC-006 | Fixing Covers, Gratings, Frames for Potable Water Network Zone 1 |  | 2026-10-11 → 2026-10-18 (+7d) | 80% → 90% | 68d → 62d |
| MOD-PWN-VC-007 | Tagging & Painting for Potable Water Network Zone 1 | 2026-10-11 → 2026-10-18 (+7d) | 2026-10-13 → 2026-10-20 (+7d) |  | 68d → 62d |
| 3 | **Flow Meter Installation** |  | 2026-11-26 → 2026-12-03 (+7d) |  |  |
| MOD-PWN-FM-002 | RC or Precast Chamber Construction for Potable Water Network Zone 1 |  | 2026-10-13 → 2026-10-20 (+7d) |  | 49.7d → 43.7d |
| MOD-PWN-FM-003 | Flowmeter Installation & Pipe Integration for Potable Water Network Zone 1 |  | 2026-11-14 → 2026-11-21 (+7d) |  | 29.65d → 23.65d |
| MOD-PWN-FM-004 | Wiring/Cabling if applicable for Potable Water Network Zone 1 | 2026-11-14 → 2026-11-21 (+7d) | 2026-11-23 → 2026-11-30 (+7d) |  | 29.65d → 23.65d |
| MOD-PWN-FM-005 | Calibration & Commissioning for Potable Water Network Zone 1 | 2026-11-23 → 2026-11-30 (+7d) | 2026-11-26 → 2026-12-03 (+7d) |  | 29.65d → 23.65d |
| 4 | **Washout & Air Valve Chambers** |  | 2026-10-18 → 2026-10-25 (+7d) |  |  |
| MOD-PWN-WA-003 | Pipe Work for Potable Water Network Zone 1 |  | 2026-10-11 → 2026-10-18 (+7d) |  | 63.4d → 57.4d |
| MOD-PWN-WA-004 | Washout (Valve + Outlet) Installation for Potable Water Network Zone 1 |  | 2026-10-12 → 2026-10-19 (+7d) |  | 63.4d → 57.4d |
| MOD-PWN-WA-005 | Air Valve Rooms (Valve + Outlet) Installation for Potable Water Network Zone 1 |  | 2026-10-14 → 2026-10-21 (+7d) |  | 63.4d → 57.4d |
| MOD-PWN-WA-006 | Covers, Ladders & Tags for Potable Water Network Zone 1 |  | 2026-10-14 → 2026-10-21 (+7d) |  | 63.4d → 57.4d |
| MOD-PWN-WA-007 | Backfilling & Final Finishing for Potable Water Network Zone 1 | 2026-10-15 → 2026-10-22 (+7d) | 2026-10-18 → 2026-10-25 (+7d) |  | 63.4d → 57.4d |
| 7 | **Irrigation Network Zone 1** |  | 2026-11-11 → 2026-11-18 (+7d) |  |  |
| 1 | **Excavation, Pipe Laying & Backfilling** |  | 2026-10-10 → 2026-10-17 (+7d) |  |  |

| ID | Task | Start | Finish | Complete | Total float |
| --- | --- | --- | --- | --- | --- |
| MOD-IRN-EB-400 | Lean Concrete / Pipe Bedding with Type B Material for Irrigation Network Zone 1 |  | 2026-10-10 → 2026-10-17 (+7d) |  | 81.86d → 74.86d |
| MOD-IRN-EB-410 | HDPE Pipe Laying (125 mm to 630 mm) for Irrigation Network Zone 1 |  | 2026-10-10 → 2026-10-17 (+7d) |  | 81.86d → 74.86d |
| MOD-IRN-EB-420 | Test (Pressure-slope) for Irrigation Network Zone 1 |  | 2026-10-10 → 2026-10-17 (+7d) |  | 81.86d → 74.86d |
| MOD-IRN-EB-430 | Coating / Wrapping for Irrigation Network Zone 1 |  | 2026-10-10 → 2026-10-17 (+7d) |  | 81.86d → 74.86d |
| MOD-IRN-EB-440 | Backfilling & Warrning Tape for Irrigation Network Zone 1 |  | 2026-10-10 → 2026-10-17 (+7d) |  | 81.86d → 74.86d |
| 2 | **Valves and Appurtenances** |  | 2026-10-12 → 2026-10-19 (+7d) |  |  |
| MOD-IRN-VA-001 | Supply & Installation of Valves (Gate Valve) for Irrigation Network Zone 1 |  | 2026-10-10 → 2026-10-17 (+7d) |  | 65.55d → 59.55d |
| MOD-IRN-VA-002 | Supply & Installation of Valves (Butterfly Valve) for Irrigation Network Zone 1 |  | 2026-10-10 → 2026-10-17 (+7d) |  | 65.55d → 59.55d |
| MOD-IRN-VA-003 | Installation of Flanges, Bolts, Collars, Nuts for Irrigation Network Zone 1 |  | 2026-10-10 → 2026-10-17 (+7d) |  | 65.55d → 59.55d |
| MOD-IRN-VA-005 | Support Brackets/Anchor Blocks for Irrigation Network Zone 1 |  | 2026-10-12 → 2026-10-19 (+7d) |  | 69.14d → 63.14d |
| MOD-IRN-VA-004 | Valve Pressure Testing for Irrigation Network Zone 1 |  | 2026-10-11 → 2026-10-18 (+7d) |  | 69.14d → 63.14d |
| 3 | **Valve Rooms** |  | 2026-10-13 → 2026-10-20 (+7d) |  |  |
| MOD-IRN-VR-002 | Blinding Concrete Valve Chamber for Irrigation Network Zone 1 |  | 2026-10-10 → 2026-10-17 (+7d) |  | 67.68d → 61.68d |
| MOD-IRN-VR-003 | RCC Base Slab & Chamber Walls Valve Chamber for Irrigation Network Zone 1 |  | 2026-10-11 → 2026-10-18 (+7d) |  | 67.68d → 61.68d |
| MOD-IRN-VR-004 | Block Wall Construction (if any) Valve Chamber for Irrigation Network Zone 1 |  | 2026-10-11 → 2026-10-18 (+7d) | 80% → 88% | 67.68d → 61.68d |
| MOD-IRN-VR-005 | Installation of Valve inside the Room Valve Chamber for Irrigation Network Zone 1 |  | 2026-10-12 → 2026-10-19 (+7d) | 80% → 88% | 67.68d → 61.68d |
| MOD-IRN-VR-006 | Fixing Frame & Cover Valve Chamber for Irrigation Network Zone 1 |  | 2026-10-13 → 2026-10-20 (+7d) | 80% → 88% | 67.68d → 61.68d |
| MOD-IRN-VR-007 | Backfilling and Finishing Valve Chamber for Irrigation Network Zone 1 |  | 2026-10-13 → 2026-10-20 (+7d) |  | 67.68d → 61.68d |
| 4 | **Washout Chambers** |  | 2026-10-10 → 2026-10-17 (+7d) |  |  |
| MOD-IRN-WC-005 | Manhole Frame, Cover & Ladder Fixing Washout Chamber for Irrigation Network Zone 1 |  | 2026-10-10 → 2026-10-17 (+7d) |  | 70.77d → 64.77d |
| MOD-IRN-WC-006 | Backfilling & Reinstatement Washout Chamber for Irrigation Network Zone 1 |  | 2026-10-10 → 2026-10-17 (+7d) |  | 70.77d → 64.77d |
| 6 | **Flow Meter Chambers** |  | 2026-11-11 → 2026-11-18 (+7d) |  |  |
| MOD-IRN-FC-003 | Flow Meter Installation (280, 300, 500 mm) Flow Meter Chamber for Irrigation Network Zone 1 |  | 2026-11-08 → 2026-11-15 (+7d) |  | 42.75d → 36.75d |
| MOD-IRN-FC-004 | Integration with Pipework Flow Meter Chamber for Irrigation Network Zone 1 |  | 2026-11-08 → 2026-11-15 (+7d) |  | 42.75d → 36.75d |
| MOD-IRN-FC-005 | Testing & Calibration Flow Meter Chamber for Irrigation Network Zone 1 | 2026-11-08 → 2026-11-15 (+7d) | 2026-11-10 → 2026-11-17 (+7d) |  | 42.75d → 36.75d |
| MOD-IRN-FC-006 | Cover and Access Arrangement Flow Meter Chamber for Irrigation Network Zone 1 | 2026-11-10 → 2026-11-17 (+7d) | 2026-11-11 → 2026-11-18 (+7d) |  | 42.75d → 36.75d |
| MOD-RCP-BW-002 | Place in layers not exceeding 300mm for Rainwater Collection Ponds Zone 1 |  |  | 80% → 90% |  |
| MOD-RCP-BW-003 | Compact each layer to required density for Rainwater Collection Ponds Zone 1 |  |  | 80% → 90% |  |
| MOD-RCP-BW-004 | Conduct field density tests for Rainwater Collection Ponds Zone 1 |  |  | 60% → 90% |  |
| 1 | **Testing & Commissioning** |  | 2027-05-23 → 2027-05-30 (+7d) |  |  |
| 1 | **Zone 3** |  | 2027-05-23 → 2027-05-30 (+7d) |  |  |
| A103610 | Testing and Commissioning for Irrigation Network Zone 3 |  | 2026-12-14 → 2026-12-19 (+5d) |  | 72.55d → 68.23d |
| A103590 | Testing and Commissioning for Rain Water Drainage Network Zone 3 |  | 2026-12-08 → 2026-12-14 (+6d) |  | 76.9d → 72.58d |
| A103600 | Testing and Commissioning for Potable Water Network Zone 3 |  | 2026-11-25 → 2026-11-30 (+5d) |  | 88.35d → 84.03d |
| A102060 | Testing and Commissioning for Sewerage Network Zone 3 |  | 2026-12-27 → 2026-12-31 (+4d) |  | 61.5d → 57.18d |
| A103620 | Testing and Commissioning for Pumping Station Zone 3 | 2027-04-24 → 2027-05-01 (+7d) | 2027-05-23 → 2027-05-30 (+7d) |  | -45.35d → -51.35d |
| 2 | **Zone 2** |  | 2026-12-22 → 2026-12-29 (+7d) |  |  |
| A103660 | Testing and Commissioning for Potable Water Network Zone 2 |  | 2026-12-02 → 2026-12-09 (+7d) |  | 82.05d → 76.05d |
| A103670 | Testing and Commissioning for Irrigation Network Zone 2 |  | 2026-11-19 → 2026-11-26 (+7d) |  | 93.15d → 87.15d |
| A103640 | Testing and Commissioning for Sewerage Network Zone 2 |  | 2026-12-22 → 2026-12-29 (+7d) |  | 64.7d → 58.7d |
| A103650 | Testing and Commissioning for Rain Water Drainage Network Zone 2 |  | 2026-11-24 → 2026-12-01 (+7d) |  | 89.05d → 83.05d |
| 3 | **Zone 1** |  | 2027-04-01 → 2027-04-08 (+7d) |  |  |
| A103710 | Testing and Commissioning for Potable Water Network Zone 1 |  | 2026-12-05 → 2026-12-08 (+3d) |  | 80.55d → 76.65d |
| A103700 | Testing and Commissioning for Rain Water Drainage Network Zone 1 |  | 2026-11-16 → 2026-11-23 (+7d) |  | 95.85d → 90.48d |
| A103720 | Testing and Commissioning for Irrigation Network Zone 1 |  | 2026-11-18 → 2026-11-25 (+7d) |  | 93.65d → 87.65d |
| A103690 | Testing and Commissioning for Sewerage Network Zone 1 |  | 2027-01-02 → 2027-01-09 (+7d) |  | 56.3d → 50.3d |
| A103730 | Testing and Commissioning for Pumping Station Zone 1 | 2027-03-21 → 2027-03-28 (+7d) | 2027-04-01 → 2027-04-08 (+7d) |  | -5.21d → -11.21d |
| HO-0001 | Mechanical as-built Submittals & Approval | 2027-05-23 → 2027-05-30 (+7d) | 2027-06-16 → 2027-06-23 (+7d) |  | -45.35d → -51.35d |
| HO-3 | Electrical as-built Submittals & Approval | 2027-05-23 → 2027-05-30 (+7d) | 2027-06-16 → 2027-06-23 (+7d) |  | -24.35d → -30.35d |
| 3 | **Handover** | 2027-06-16 → 2027-06-23 (+7d) | 2027-07-11 → 2027-07-18 (+7d) |  |  |
| HO-0003 | Handover & Demobilization | 2027-06-16 → 2027-06-23 (+7d) | 2027-07-11 → 2027-07-18 (+7d) |  | -45.35d → -51.35d |

## Version 5 (data date 2026-10-24, saved 2026-10-27, file 38-MOD-2937-B4-Up- 102726.xer)

Last finish stays 2027-10-24.

Changed:

| ID | Task | Start | Finish | Total float |
| --- | --- | --- | --- | --- |
| MIL-0003 | Submission of Report, Work Plan, and Schedule | 2026-10-17 → 2026-10-24 (+7d) | 2026-10-17 → 2026-10-24 (+7d) | 214d → 207d |
| MIL-0004 | Submission and Approval of Drawings and Specifications | 2026-10-22 → 2026-10-29 (+7d) | 2026-10-22 → 2026-10-29 (+7d) | -175d → -182d |
| MIL-0005 | Completion of Water Networks and Tanks | 2027-01-05 → 2027-01-12 (+7d) | 2027-01-05 → 2027-01-12 (+7d) | -5.5d → -12.5d |
| 2 | **Mobilization** |  | 2027-01-05 → 2027-01-12 (+7d) |  |
| 8 | **Deliverables** |  | 2027-01-05 → 2027-01-12 (+7d) |  |
| 1 | **Submittals** |  | 2026-12-24 → 2026-12-31 (+7d) |  |
| S10002 | Prepare & Submit Method of Statement |  | 2026-10-20 → 2026-10-27 (+7d) | 56.4d → 50.4d |
| S100015 | Prepare & Submit Pre-commissioning/ Commissioning Plan/ Startup/ Testing / Handover Plan | 2026-10-17 → 2026-10-24 (+7d) | 2026-12-24 → 2026-12-31 (+7d) | -4.6d → -10.6d |
| 2 | **Approvals** |  | 2027-01-05 → 2027-01-12 (+7d) |  |
| S100106 | Approval of Method of Statement |  | 2026-10-26 → 2026-11-02 (+7d) | 56.4d → 50.4d |
| S100086 | Approval of Pre-commissioning/ Commissioning Plan/ Startup/ Testing / Handover Plan | 2026-12-26 → 2027-01-02 (+7d) | 2027-01-05 → 2027-01-12 (+7d) | -4.6d → -10.6d |
| 7 | **Engineering** |  | 2026-10-28 → 2026-11-04 (+7d) |  |
| 3 | **Shop Drawing** |  | 2026-10-22 → 2026-10-29 (+7d) |  |
| 2 | **Approvals** |  | 2026-10-22 → 2026-10-29 (+7d) |  |
| A1630 | Landscape details approval |  | 2026-10-22 → 2026-10-29 (+7d) | -122d → -127d |
| 1 | **Material Submittal & Approval** |  | 2026-10-28 → 2026-11-04 (+7d) |  |
| 20 | **Long Lead Items** |  | 2026-10-21 → 2026-10-28 (+7d) |  |
| 13 | **Generators & Fuel Tanks - PS & Control Bldg backup power** |  | 2026-10-21 → 2026-10-28 (+7d) |  |
| A102930 | Material Submittal for Generators & Fuel Tanks - PS & Control Bldg backup power |  | 2026-10-20 → 2026-10-27 (+7d) | -9.21d → -14.21d |
| A102940 | Material Approval for Generators & Fuel Tanks - PS & Control Bldg backup power |  | 2026-10-21 → 2026-10-28 (+7d) | -9.21d → -14.21d |
| 21 | **Short Lead Items** |  | 2026-10-28 → 2026-11-04 (+7d) |  |
| 15 | **Interlock Tiles / Curbstone - Roads, Sidewalks, Landscape** |  | 2026-10-27 → 2026-11-03 (+7d) |  |
| A103180 | Material Approval for Interlock Tiles / Curbstone - Roads, Sidewalks, Landscape |  | 2026-10-27 → 2026-11-03 (+7d) | 19.73d → 14.73d |
| 16 | **Landscaping Materials (Soil, Plants) - Final works, softscape** |  | 2026-10-28 → 2026-11-04 (+7d) |  |
| A103200 | Material Approval for Landscaping Materials (Soil, Plants) - Final works, softscape |  | 2026-10-28 → 2026-11-04 (+7d) | -105.3d → -110.3d |
| 3 | **Procurement** |  | 2027-02-23 → 2027-03-07 (+12d) |  |
| 1 | **Prequalification** |  | 2026-10-21 → 2026-10-28 (+7d) |  |
| 21 | **Short Lead Items** |  | 2026-10-21 → 2026-10-28 (+7d) |  |
| 15 | **Interlock Tiles / Curbstone - Roads, Sidewalks, Landscape** |  | 2026-10-21 → 2026-10-28 (+7d) |  |
| A103560 | Prequalification Approval for Interlock Tiles / Curbstone - Roads, Sidewalks, Landscape |  | 2026-10-21 → 2026-10-28 (+7d) | 23.73d → 17.73d |
| 16 | **Landscaping Materials (Soil, Plants) - Final works, softscape** |  | 2026-10-21 → 2026-10-28 (+7d) |  |
| A103580 | Prequalification Approval for Landscaping Materials (Soil, Plants) - Final works, softscape |  | 2026-10-21 → 2026-10-28 (+7d) | -124.3d → -130.3d |
| 20 | **Long Lead Items** |  | 2026-12-14 → 2026-12-21 (+7d) |  |
| 2 | **Drainage Channel Covers (GRP / DI) - For storm and wastewater** |  | 2026-10-18 → 2026-10-25 (+7d) |  |
| A102570 | Custom Clearance for Drainage Channel Covers (GRP / DI) - For storm and wastewater |  | 2026-10-17 → 2026-10-24 (+7d) | -80.11d → -86.11d |
| A1230 | Manufacturing for Drainage Channel Covers (GRP / DI) - For storm and wastewater |  | 2026-10-17 → 2026-10-24 (+7d) | -80.11d → -86.11d |
| A1240 | Delivery for Drainage Channel Covers (GRP / DI) - For storm and wastewater |  | 2026-10-17 → 2026-10-24 (+7d) | -80.11d → -86.11d |
| A102580 | Staging Time for Drainage Channel Covers (GRP / DI) - For storm and wastewater |  | 2026-10-18 → 2026-10-25 (+7d) | -80.11d → -86.11d |
| 3 | **Control & Instrumentation Devices - Flow meters, pressure sensors** |  | 2026-11-12 → 2026-11-19 (+7d) |  |
| A1530 | Manufacturing for Control & Instrumentation Devices - Flow meters, pressure sensors |  | 2026-10-18 → 2026-10-25 (+7d) | -51.35d → -57.35d |
| A102610 | Custom Clearance for Control & Instrumentation Devices - Flow meters, pressure sensors |  | 2026-10-18 → 2026-10-25 (+7d) | -51.35d → -57.35d |
| A1570 | Delivery for Control & Instrumentation Devices - Flow meters, pressure sensors |  | 2026-10-20 → 2026-10-27 (+7d) | -51.35d → -57.35d |
| A102620 | Staging Time for Control & Instrumentation Devices - Flow meters, pressure sensors |  | 2026-11-12 → 2026-11-19 (+7d) | -51.35d → -57.35d |
| 10 | **Pumps (Sewage, Irrigation, Booster) - Especially for pumping stations** |  | 2026-10-21 → 2026-10-28 (+7d) |  |
| A102150 | Manufacturing for Pumps (Sewage, Irrigation, Booster) - Especially for pumping stations |  | 2026-10-17 → 2026-10-24 (+7d) | 33.3d → 27.3d |
| A102170 | Delivery for Pumps (Sewage, Irrigation, Booster) - Especially for pumping stations |  | 2026-10-19 → 2026-10-26 (+7d) | 33.3d → 27.3d |
| A102630 | Custom Clearance for Pumps (Sewage, Irrigation, Booster) - Especially for pumping stations |  | 2026-10-18 → 2026-10-25 (+7d) | 33.3d → 27.3d |
| A102640 | Staging Time for Pumps (Sewage, Irrigation, Booster) - Especially for pumping stations |  | 2026-10-21 → 2026-10-28 (+7d) | 33.3d → 27.3d |
| 13 | **Generators & Fuel Tanks - PS & Control Bldg backup power** |  | 2026-11-09 → 2026-11-16 (+7d) |  |
| A102230 | Manufacturing for Generators & Fuel Tanks - PS & Control Bldg backup power |  | 2026-10-25 → 2026-11-01 (+7d) | -11.21d → -17.21d |
| A102250 | Delivery for Generators & Fuel Tanks - PS & Control Bldg backup power |  | 2026-10-26 → 2026-11-02 (+7d) | -11.21d → -17.21d |
| A102670 | Custom Clearance for Generators & Fuel Tanks - PS & Control Bldg backup power |  | 2026-10-25 → 2026-11-01 (+7d) | -11.21d → -17.21d |
| A102680 | Staging Time for Generators & Fuel Tanks - PS & Control Bldg backup power |  | 2026-11-09 → 2026-11-16 (+7d) | -11.21d → -17.21d |
| 11 | **Odor Control Units - Sewer PS-specific** |  | 2026-12-14 → 2026-12-21 (+7d) |  |
| A102720 | Staging Time for Odor Control Units - Sewer PS-specific | 2026-11-09 → 2026-11-16 (+7d) | 2026-12-14 → 2026-12-21 (+7d) | -11.21d → -17.21d |
| 21 | **Short Lead Items** |  | 2027-02-23 → 2027-03-07 (+12d) |  |
| 1 | **Asphalt** |  | 2026-12-15 → 2026-12-22 (+7d) |  |
| A102730 | Delivery for Asphalt Phase 1 |  | 2026-12-15 → 2026-12-22 (+7d) | 45.58d → 39.58d |
| A103740 | Delivery for Asphalt Phase 2 |  | 2026-12-15 → 2026-12-22 (+7d) | 45.58d → 39.58d |
| A103750 | Delivery for Asphalt Phase 3 |  | 2026-12-15 → 2026-12-22 (+7d) | 89.66d → 83.66d |
| 15 | **Interlock Tiles / Curbstone - Roads, Sidewalks, Landscape** |  | 2026-11-16 → 2026-11-23 (+7d) |  |
| A102380 | Manufacturing for Interlock Tiles / Curbstone - Roads, Sidewalks, Landscape |  | 2026-10-27 → 2026-11-03 (+7d) | 23.73d → 17.73d |
| A102400 | Delivery for Interlock Tiles / Curbstone - Roads, Sidewalks, Landscape |  | 2026-10-28 → 2026-11-04 (+7d) | 23.73d → 17.73d |
| A102820 | Staging Time for Interlock Tiles / Curbstone - Roads, Sidewalks, Landscape |  | 2026-11-16 → 2026-11-23 (+7d) | 23.73d → 17.73d |
| 16 | **Landscaping Materials (Soil, Plants) - Final works, softscape** | 2026-10-28 → 2026-11-04 (+7d) | 2027-02-23 → 2027-03-07 (+12d) |  |
| A102350 | Issue PO for Landscaping Materials (Soil, Plants) - Final works, softscape | 2026-10-28 → 2026-11-04 (+7d) | 2026-11-02 → 2026-11-09 (+7d) | -125.3d → -131.3d |
| A102360 | Manufacturing for Landscaping Materials (Soil, Plants) - Final works, softscape | 2026-11-02 → 2026-11-09 (+7d) | 2027-01-11 → 2027-01-18 (+7d) | -125.3d → -131.3d |
| A102390 | Delivery for Landscaping Materials (Soil, Plants) - Final works, softscape | 2027-01-11 → 2027-01-18 (+7d) | 2027-02-23 → 2027-03-07 (+12d) | -125.3d → -131.3d |
| 2 | **Sewerage Network Zone 3** |  | 2027-05-01 → 2027-05-08 (+7d) |  |
| 3 | **Pipework: Supply, Installation, and Testing** |  | 2026-11-09 → 2026-11-16 (+7d) |  |

| ID | Task | Start | Finish | Complete | Total float |
| --- | --- | --- | --- | --- | --- |
| 3 | **HDPE Pressure Pipes Installation (250mm–630mm)** |  | 2026-11-09 → 2026-11-16 (+7d) |  |  |
| MOD-SWN-PW-425 | Test (Pressure - Slope) HDPE for Sewerage Network Zone 3 |  | 2026-10-19 → 2026-10-26 (+7d) |  | 133.38d → 126.38d |
| MOD-SWN-PW-435 | Coating / Wrapping HDPE for Sewerage Network Zone 3 |  | 2026-10-25 → 2026-11-01 (+7d) |  | 133.38d → 126.38d |
| MOD-SWN-PW-395 | Backfilling & Warrning Tape HDPE for Sewerage Network Zone 3 | 2026-10-26 → 2026-11-02 (+7d) | 2026-11-09 → 2026-11-16 (+7d) |  | 133.38d → 126.38d |
| 4 | **Fittings and Valves** | 2026-10-17 → 2026-10-24 (+7d) | 2026-11-16 → 2026-11-23 (+7d) |  |  |
| MOD-SWN-FV-55 | Supply & Installation of HDPE Elbows for Sewerage Network Zone 3 | 2026-10-17 → 2026-10-24 (+7d) | 2026-10-22 → 2026-10-29 (+7d) |  | 93.08d → 87.08d |
| MOD-SWN-FV-65 | Gate Valves Installation for Sewerage Network Zone 3 | 2026-10-24 → 2026-10-31 (+7d) | 2026-10-27 → 2026-11-03 (+7d) |  | 93.08d → 87.08d |
| MOD-SWN-FV-75 | Drain Valves Installation for Sewerage Network Zone 3 | 2026-10-28 → 2026-11-04 (+7d) | 2026-11-01 → 2026-11-08 (+7d) |  | 93.08d → 87.08d |
| MOD-SWN-FV-85 | Air Breather & Air Release Valves Installation for Sewerage Network Zone 3 | 2026-11-02 → 2026-11-09 (+7d) | 2026-11-12 → 2026-11-19 (+7d) |  | 93.08d → 87.08d |
| MOD-SWN-FV-95 | Jointing & Piping Accessories Installation for Sewerage Network Zone 3 | 2026-11-14 → 2026-11-21 (+7d) | 2026-11-16 → 2026-11-23 (+7d) |  | 93.08d → 87.08d |
| 6 | **Valve & Flow Meter Chambers** |  | 2026-12-28 → 2027-01-02 (+5d) |  |  |
| 1 | **Valve Chambers Construction** |  | 2026-11-30 → 2026-12-04 (+4d) |  |  |
| MOD-SWN-PW-815 | Excavation Valve Chamber for Sewerage Network Zone 3 |  | 2026-10-25 → 2026-10-31 (+6d) | 60% → 65% | 84.48d → 79.88d |
| MOD-SWN-PW-825 | Lean Concrete / Bedding Valve Chamber for Sewerage Network Zone 3 |  | 2026-11-04 → 2026-11-09 (+5d) | 50% → 55% | 84.48d → 79.88d |
| MOD-SWN-VF-84 | Valve Chambers Construction Valve Chamber for Sewerage Network Zone 3 |  | 2026-11-07 → 2026-11-12 (+5d) | 50% → 55% | 84.48d → 79.88d |
| MOD-SWN-PW-835 | Test Valve Chamber for Sewerage Network Zone 3 |  | 2026-11-15 → 2026-11-19 (+4d) | 50% → 55% | 112.98d → 109.13d |
| MOD-SWN-PW-805 | Backfilling Valve Chamber for Sewerage Network Zone 3 | 2026-11-15 → 2026-11-19 (+4d) | 2026-11-30 → 2026-12-04 (+4d) |  | 112.98d → 109.13d |
| 2 | **Water Drain Chambers Construction** |  | 2026-12-17 → 2026-12-21 (+4d) |  |  |
| MOD-SWN-PW-855 | Excavation Water Drain Chamber for Sewerage Network Zone 3 |  | 2026-10-23 → 2026-10-30 (+7d) |  | 91.68d → 84.68d |
| MOD-SWN-PW-865 | Lean Concrete / Bedding Water Drain Chamber for Sewerage Network Zone 3 |  | 2026-10-31 → 2026-11-07 (+7d) |  | 91.68d → 84.68d |
| MOD-SWN-VF-94 | Water Drain Chambers Construction Water Drain Chamber for Sewerage Network Zone 3 |  | 2026-11-17 → 2026-11-21 (+4d) |  | 84.48d → 79.88d |
| MOD-SWN-PW-875 | Test Water Drain Chamber for Sewerage Network Zone 3 | 2026-11-17 → 2026-11-22 (+5d) | 2026-12-02 → 2026-12-06 (+4d) |  | 95.98d → 91.38d |
| MOD-SWN-PW-845 | Backfilling Water Drain Chamber for Sewerage Network Zone 3 | 2026-12-02 → 2026-12-07 (+5d) | 2026-12-17 → 2026-12-21 (+4d) |  | 95.98d → 91.38d |
| 3 | **Discharge Chambers Construction** |  | 2026-12-23 → 2026-12-28 (+5d) |  |  |
| MOD-SWN-PW-895 | Excavation Discharge Chamber for Sewerage Network Zone 3 |  | 2026-10-25 → 2026-11-01 (+7d) |  | 96.98d → 89.98d |
| MOD-SWN-PW-905 | Lean Concrete / Bedding Discharge Chamber for Sewerage Network Zone 3 |  | 2026-11-04 → 2026-11-11 (+7d) |  | 96.98d → 89.98d |
| MOD-SWN-VF-104 | Discharge Chambers Construction Discharge Chamber for Sewerage Network Zone 3 |  | 2026-11-23 → 2026-11-28 (+5d) |  | 84.48d → 79.88d |
| MOD-SWN-PW-915 | Test Discharge Chamber for Sewerage Network Zone 3 | 2026-11-23 → 2026-11-28 (+5d) | 2026-12-08 → 2026-12-13 (+5d) |  | 89.48d → 84.88d |
| MOD-SWN-PW-885 | Backfilling Discharge Chamber for Sewerage Network Zone 3 | 2026-12-08 → 2026-12-13 (+5d) | 2026-12-23 → 2026-12-28 (+5d) |  | 89.48d → 84.88d |
| 4 | **Flow Meter Chambers Construction** |  | 2026-12-28 → 2027-01-02 (+5d) |  |  |
| MOD-SWN-PW-935 | Excavation Flow Meter Chamber for Sewerage Network Zone 3 |  | 2026-10-25 → 2026-11-01 (+7d) |  | 101.38d → 94.38d |
| MOD-SWN-PW-945 | Lean Concrete / Bedding Flow Meter Chamber for Sewerage Network Zone 3 |  | 2026-11-06 → 2026-11-13 (+7d) |  | 101.38d → 94.38d |
| MOD-SWN-VF-114 | Flow Meter Chambers Construction Flow Meter Chamber for Sewerage Network Zone 3 | 2026-11-23 → 2026-11-28 (+5d) | 2026-11-28 → 2026-12-03 (+5d) |  | 84.48d → 79.88d |
| MOD-SWN-PW-955 | Test Flow Meter Chamber for Sewerage Network Zone 3 | 2026-11-28 → 2026-12-03 (+5d) | 2026-12-13 → 2026-12-18 (+5d) |  | 84.48d → 79.88d |
| MOD-SWN-PW-925 | Backfilling Flow Meter Chamber for Sewerage Network Zone 3 | 2026-12-13 → 2026-12-18 (+5d) | 2026-12-28 → 2027-01-02 (+5d) |  | 84.48d → 79.88d |
| 7 | **Manholes** |  | 2026-12-11 → 2026-12-14 (+3d) |  |  |
| 2 | **1500mm GRP Manholes (Standard & Backdrop)** |  | 2026-11-30 → 2026-12-04 (+4d) |  |  |
| MOD-SWN-PW-1655 | Excavation 1.5m GRP for Sewerage Network Zone 3 |  | 2026-10-19 → 2026-10-26 (+7d) |  | 101.58d → 98.58d |
| MOD-SWN-PW-1665 | Lean Concrete / Bedding 1.5m GRP for Sewerage Network Zone 3 |  | 2026-10-25 → 2026-10-31 (+6d) | 70% → 75% | 101.58d → 98.58d |
| MOD-SWN-MH-195 | 1500mm GRP Manholes (Standard & Backdrop) 1.5m GRP for Sewerage Network Zone 3 |  | 2026-10-31 → 2026-11-04 (+4d) | 70% → 80% | 101.58d → 98.58d |
| MOD-SWN-PW-1675 | Test 1.5m GRP for Sewerage Network Zone 3 | 2026-10-31 → 2026-11-04 (+4d) | 2026-11-15 → 2026-11-19 (+4d) |  | 112.68d → 108.83d |
| MOD-SWN-PW-1645 | Backfilling 1.5m GRP for Sewerage Network Zone 3 | 2026-11-15 → 2026-11-19 (+4d) | 2026-11-30 → 2026-12-04 (+4d) |  | 112.68d → 108.83d |
| 3 | **1800mm GRP Manholes (Standard & Backdrop)** |  | 2026-12-05 → 2026-12-08 (+3d) |  |  |
| MOD-SWN-PW-1695 | Excavation 1.8m GRP for Sewerage Network Zone 3 |  | 2026-10-19 → 2026-10-25 (+6d) | 90% → 92% | 107.88d → 104.25d |
| MOD-SWN-PW-1705 | Lean Concrete / Bedding 1.8m GRP for Sewerage Network Zone 3 |  | 2026-10-25 → 2026-10-29 (+4d) | 70% → 80% | 107.88d → 104.25d |
| MOD-SWN-MH-205 | 1800mm GRP Manholes (Standard & Backdrop) 1.8m GRP for Sewerage Network Zone 3 |  | 2026-11-05 → 2026-11-08 (+3d) | 70% → 75% | 101.58d → 98.58d |
| MOD-SWN-PW-1715 | Test 1.8m GRP for Sewerage Network Zone 3 | 2026-11-05 → 2026-11-08 (+3d) | 2026-11-20 → 2026-11-23 (+3d) |  | 107.58d → 104.58d |
| MOD-SWN-PW-1685 | Backfilling 1.8m GRP for Sewerage Network Zone 3 | 2026-11-20 → 2026-11-23 (+3d) | 2026-12-05 → 2026-12-08 (+3d) |  | 107.58d → 104.58d |
| 4 | **2000mm GRP Manholes (Standard & Backdrop)** |  | 2026-12-11 → 2026-12-14 (+3d) |  |  |
| MOD-SWN-PW-1735 | Excavation 2m GRP for Sewerage Network Zone 3 |  | 2026-10-19 → 2026-10-25 (+6d) | 90% → 93% | 112.98d → 107.66d |
| MOD-SWN-PW-1745 | Lean Concrete / Bedding 2m GRP for Sewerage Network Zone 3 |  | 2026-10-25 → 2026-10-30 (+5d) | 70% → 75% | 112.98d → 107.66d |
| MOD-SWN-MH-215 | 2000mm GRP Manholes (Standard & Backdrop) 2m GRP for Sewerage Network Zone 3 | 2026-11-05 → 2026-11-08 (+3d) | 2026-11-11 → 2026-11-14 (+3d) |  | 101.58d → 98.58d |
| MOD-SWN-PW-1755 | Test 2m GRP for Sewerage Network Zone 3 | 2026-11-11 → 2026-11-14 (+3d) | 2026-11-26 → 2026-11-29 (+3d) |  | 101.58d → 98.58d |
| MOD-SWN-PW-1725 | Backfilling 2m GRP for Sewerage Network Zone 3 | 2026-11-26 → 2026-11-29 (+3d) | 2026-12-11 → 2026-12-14 (+3d) |  | 101.58d → 98.58d |
| 5 | **Pumping Stations** |  | 2027-05-01 → 2027-05-08 (+7d) |  |  |
| 1 | **Sewage Pumps and MCC System** | 2026-11-09 → 2026-11-16 (+7d) | 2026-12-28 → 2027-01-04 (+7d) |  |  |
| MOD-SWN-PS-644 | Sewage pumps (2x30 l/s, 1x115 l/s) incl. MCC – PS3 for Sewerage Network Zone 3 | 2026-11-09 → 2026-11-16 (+7d) | 2026-12-03 → 2026-12-10 (+7d) |  | 38.79d → 32.79d |
| MOD-SWN-PS-654 | Sewage pumps (2x100 l/s) incl. MCC – PS4 for Sewerage Network Zone 3 | 2026-12-03 → 2026-12-10 (+7d) | 2026-12-28 → 2027-01-04 (+7d) |  | 38.79d → 32.79d |
| 3 | **In-Line Booster Stations** | 2026-10-17 → 2026-10-24 (+7d) | 2026-12-28 → 2027-01-04 (+7d) |  |  |
| MOD-SWN-PS-674 | In-Line Booster Stations - Civil Works for Sewerage Network Zone 3 | 2026-10-17 → 2026-10-24 (+7d) | 2026-11-09 → 2026-11-16 (+7d) |  | 38.6d → 32.6d |
| MOD-SWN-PS-1144 | In-Line Booster Stations - Mechanical Works for Sewerage Network Zone 3 | 2026-11-10 → 2026-11-17 (+7d) | 2026-12-03 → 2026-12-10 (+7d) |  | 38.6d → 32.6d |
| MOD-SWN-PS-1154 | In-Line Booster Stations - Electrical Works for Sewerage Network Zone 3 | 2026-12-05 → 2026-12-12 (+7d) | 2026-12-28 → 2027-01-04 (+7d) |  | 38.6d → 32.6d |
| 7 | **Engine/Motor Control Center Buildings** | 2026-10-17 → 2026-10-24 (+7d) | 2026-10-25 → 2026-11-01 (+7d) |  |  |
| MOD-SWN-PS-934 | MCC Building – PS3 for Sewerage Network Zone 3 | 2026-10-17 → 2026-10-24 (+7d) | 2026-10-17 → 2026-10-24 (+7d) |  | -29.1d → -35.1d |
| MOD-SWN-PS-944 | MCC Building – PS4 for Sewerage Network Zone 3 | 2026-10-18 → 2026-10-25 (+7d) | 2026-10-25 → 2026-11-01 (+7d) |  | 3.3d → -2.7d |
| 4 | **Valves and Fittings (General Supply & Installation)** |  | 2026-11-19 → 2026-11-26 (+7d) |  |  |
| MOD-SWN-PS-714 | Valves, fittings, flow meters – PS3 for Sewerage Network Zone 3 |  | 2026-11-14 → 2026-11-21 (+7d) |  | -51.35d → -57.35d |
| MOD-SWN-PS-724 | Valves, fittings, flow meters – PS4 for Sewerage Network Zone 3 |  | 2026-11-17 → 2026-11-24 (+7d) |  | -51.35d → -57.35d |
| MOD-SWN-PS-734 | 35mm SS 316 mesh network – PS4 for Sewerage Network Zone 3 |  | 2026-11-19 → 2026-11-26 (+7d) |  | -51.35d → -57.35d |
| 5 | **Tank with Canopy** | 2026-11-19 → 2026-11-26 (+7d) | 2026-12-03 → 2026-12-10 (+7d) |  |  |

| ID | Task | Start | Finish | Total float |
| --- | --- | --- | --- | --- |
| MOD-SWN-PS-754 | Tank with canopy (per specs/drawings) - PS4 for Sewerage Network Zone 3 | 2026-11-19 → 2026-11-26 (+7d) | 2026-12-03 → 2026-12-10 (+7d) | -51.35d → -57.35d |
| 6 | **Pump Well and Valve Chambers** | 2026-12-03 → 2026-12-10 (+7d) | 2027-03-22 → 2027-03-29 (+7d) |  |
| MOD-SWN-PS-844 | Pump well & valve chamber structure – PS3 (2 wells, 5x5m, 11m depth) for Sewerage Network Zone 3 | 2026-12-03 → 2026-12-10 (+7d) | 2026-12-28 → 2027-01-04 (+7d) | -51.35d → -57.35d |
| MOD-SWN-PS-854 | Concrete wall (5x5x1m) inside PS3 well for Sewerage Network Zone 3 | 2026-12-28 → 2027-01-04 (+7d) | 2027-01-02 → 2027-01-09 (+7d) | 5.95d → -0.05d |
| MOD-SWN-PS-884 | Pump well & valve chamber structure – PS4 (1 well, 4m, 11m depth) for Sewerage Network Zone 3 | 2026-12-28 → 2027-01-04 (+7d) | 2027-01-23 → 2027-01-30 (+7d) | -51.35d → -57.35d |
| MOD-SWN-PS-864 | Valve chamber – PS3 for Sewerage Network Zone 3 | 2027-01-02 → 2027-01-09 (+7d) | 2027-01-25 → 2027-02-01 (+7d) | 5.95d → -0.05d |
| MOD-SWN-PS-894 | Valve chamber – PS4 for Sewerage Network Zone 3 | 2027-01-23 → 2027-01-30 (+7d) | 2027-02-24 → 2027-03-08 (+12d) | -51.35d → -57.35d |
| MOD-SWN-PS-874 | Flow meter chamber – PS3 for Sewerage Network Zone 3 | 2027-01-25 → 2027-02-01 (+7d) | 2027-02-04 → 2027-02-15 (+11d) | 5.95d → -0.05d |
| MOD-SWN-PS-904 | Flow meter chamber – PS4 for Sewerage Network Zone 3 | 2027-02-24 → 2027-03-08 (+12d) | 2027-03-22 → 2027-03-29 (+7d) | -51.35d → -57.35d |
| 8 | **Odor Control System Base/Plinth** | 2027-04-22 → 2027-04-29 (+7d) | 2027-04-29 → 2027-05-06 (+7d) |  |
| MOD-SWN-PS-954 | Concrete plinth below odor control – PS3 & PS4 for Sewerage Network Zone 3 | 2027-04-22 → 2027-04-29 (+7d) | 2027-04-29 → 2027-05-06 (+7d) | -51.35d → -57.35d |
| 10 | **Lighting Works** |  | 2027-05-01 → 2027-05-08 (+7d) |  |
| MOD-SWN-PS-1024 | 250W Flood Light installation – PS3 & PS4 for Sewerage Network Zone 3 |  | 2027-05-01 → 2027-05-08 (+7d) | -51.35d → -57.35d |
| 11 | **Duct Works** | 2027-03-22 → 2027-03-29 (+7d) | 2027-03-30 → 2027-04-06 (+7d) |  |
| MOD-SWN-PS-1034 | uPVC duct Track 1 – PS3 & PS4 for Sewerage Network Zone 3 | 2027-03-22 → 2027-03-29 (+7d) | 2027-03-23 → 2027-03-30 (+7d) | -51.35d → -57.35d |
| MOD-SWN-PS-1044 | uPVC duct Track 2 – PS3 & PS4 for Sewerage Network Zone 3 | 2027-03-23 → 2027-03-30 (+7d) | 2027-03-25 → 2027-04-01 (+7d) | -51.35d → -57.35d |
| MOD-SWN-PS-1054 | uPVC duct Track 8 – PS3 & PS4 for Sewerage Network Zone 3 | 2027-03-25 → 2027-04-01 (+7d) | 2027-03-30 → 2027-04-06 (+7d) | -51.35d → -57.35d |
| 12 | **Grounding Works** | 2027-03-30 → 2027-04-06 (+7d) | 2027-04-03 → 2027-04-10 (+7d) |  |
| MOD-SWN-PS-1064 | Grounding pit – PS3 & PS4 for Sewerage Network Zone 3 | 2027-03-30 → 2027-04-06 (+7d) | 2027-03-31 → 2027-04-07 (+7d) | -51.35d → -57.35d |
| MOD-SWN-PS-1074 | 600x600 Cable pull pit – PS3 & PS4 for Sewerage Network Zone 3 | 2027-03-31 → 2027-04-07 (+7d) | 2027-04-03 → 2027-04-10 (+7d) | -51.35d → -57.35d |
| 13 | **Landscaping / Interlocking Tiles** | 2027-04-03 → 2027-04-10 (+7d) | 2027-04-27 → 2027-05-04 (+7d) |  |
| MOD-SWN-PS-1084 | Building perimeter interlock tiles for Sewerage Network Zone 3 | 2027-04-03 → 2027-04-10 (+7d) | 2027-04-22 → 2027-04-29 (+7d) | -51.35d → -57.35d |
| MOD-SWN-PS-1094 | Entrance road paving tiles for Sewerage Network Zone 3 | 2027-04-22 → 2027-04-29 (+7d) | 2027-04-27 → 2027-05-04 (+7d) | -48.05d → -54.05d |
| 14 | **Pumping Station Internal Drainage Network** | 2027-04-03 → 2027-04-10 (+7d) | 2027-04-11 → 2027-04-18 (+7d) |  |
| MOD-SWN-PS-1104 | Internal surface drainage channels for Sewerage Network Zone 3 | 2027-04-03 → 2027-04-10 (+7d) | 2027-04-11 → 2027-04-18 (+7d) | -34.05d → -40.05d |
| 14 | **Rainwater Drainage Network Zone 3** |  | 2026-12-10 → 2026-12-17 (+7d) |  |
| 1 | **Pipe Laying Works** |  | 2026-11-15 → 2026-11-22 (+7d) |  |
| 2 | **Supply & Installation of uPVC Pipes (250–300mm dia)** |  | 2026-10-23 → 2026-10-30 (+7d) |  |
| MOD-RWN-PL-233 | Excavation to required depth UPVC for Rainwater Drainage Network Zone 3 |  | 2026-10-18 → 2026-10-25 (+7d) | -111.11d → -118.11d |
| MOD-RWN-PL-243 | Lean Concrete / Bedding UPVC for Rainwater Drainage Network Zone 3 |  | 2026-10-18 → 2026-10-25 (+7d) | -111.11d → -118.11d |
| MOD-RWN-PL-253 | Laying of uPVC pipe UPVC for Rainwater Drainage Network Zone 3 |  | 2026-10-19 → 2026-10-26 (+7d) | -111.11d → -118.11d |
| MOD-RWN-PL-283 | Test (Pressure-slope) UPVC for Rainwater Drainage Network Zone 3 |  | 2026-10-19 → 2026-10-26 (+7d) | -111.11d → -118.11d |
| MOD-RWN-PL-263 | Coating / Wrapping UPVC for Rainwater Drainage Network Zone 3 |  | 2026-10-20 → 2026-10-27 (+7d) | -85.31d → -92.31d |
| MOD-RWN-PL-293 | Backfilling & Warning Tape UPVC for Rainwater Drainage Network Zone 3 |  | 2026-10-23 → 2026-10-30 (+7d) | -88.91d → -95.91d |
| 3 | **Supply & Installation of GRP Pipes (350–800mm dia)** |  | 2026-11-06 → 2026-11-13 (+7d) |  |
| MOD-RWN-PL-343 | Test (Pressure-slope) GRP for Rainwater Drainage Network Zone 3 |  | 2026-10-22 → 2026-10-29 (+7d) | -103.06d → -110.06d |
| MOD-RWN-PL-344 | Coating / Wrapping GRP for Rainwater Drainage Network Zone 3 |  | 2026-11-01 → 2026-11-08 (+7d) | -103.06d → -110.06d |
| MOD-RWN-PL-353 | Backfilling & compaction GRP for Rainwater Drainage Network Zone 3 |  | 2026-11-06 → 2026-11-13 (+7d) | -103.06d → -110.06d |
| 4 | **uPVC Connection Pipes (150mm dia)** |  | 2026-11-15 → 2026-11-22 (+7d) |  |
| MOD-RWN-PL-373 | Excavate short trench paths UPVC Con. for Rainwater Drainage Network Zone 3 |  | 2026-10-17 → 2026-10-24 (+7d) | -109.29d → -116.29d |
| MOD-RWN-PL-383 | Lean Concrete / bedding material UPVC Con. for Rainwater Drainage Network Zone 3 |  | 2026-10-17 → 2026-10-24 (+7d) | -109.29d → -116.29d |
| MOD-RWN-PL-393 | Lay & connect UPVC Con. for Rainwater Drainage Network Zone 3 |  | 2026-10-20 → 2026-10-27 (+7d) | -111.11d → -118.11d |
| MOD-RWN-PL-403 | Test (Pressure-slope) UPVC Con. for Rainwater Drainage Network Zone 3 | 2026-10-20 → 2026-10-27 (+7d) | 2026-10-23 → 2026-10-30 (+7d) | -111.11d → -118.11d |
| MOD-RWN-PL-723 | Coating / Wrapping UPVC Con. for Rainwater Drainage Network Zone 3 | 2026-10-23 → 2026-10-30 (+7d) | 2026-11-13 → 2026-11-20 (+7d) | -111.11d → -118.11d |
| MOD-RWN-PL-413 | Backfilling & compaction UPVC Con. for Rainwater Drainage Network Zone 3 | 2026-11-13 → 2026-11-20 (+7d) | 2026-11-15 → 2026-11-22 (+7d) | -111.11d → -118.11d |
| 5 | **Precast Concrete Box Culverts** |  | 2026-12-10 → 2026-12-17 (+7d) |  |
| 1 | **Box Culverts (500x500mm to 3500x800mm)** |  | 2026-12-10 → 2026-12-17 (+7d) |  |
| MOD-RWN-PC-254 | Dewatering and trench shoring Box culvert for Rainwater Drainage Network Zone 3 |  | 2026-10-25 → 2026-11-01 (+7d) | -116.56d → -122.56d |
| MOD-RWN-PC-264 | Bedding preparation (gravel/lean concrete) Box culvert for Rainwater Drainage Network Zone 3 | 2026-10-25 → 2026-11-01 (+7d) | 2026-10-29 → 2026-11-05 (+7d) | -116.56d → -122.56d |
| MOD-RWN-PC-274 | Installation of box culvert units Box culvert for Rainwater Drainage Network Zone 3 | 2026-10-29 → 2026-11-05 (+7d) | 2026-11-10 → 2026-11-17 (+7d) | -116.56d → -122.56d |
| MOD-RWN-PC-284 | Alignment and joint sealing Box culvert for Rainwater Drainage Network Zone 3 | 2026-11-10 → 2026-11-17 (+7d) | 2026-11-15 → 2026-11-22 (+7d) | -116.56d → -122.56d |
| MOD-RWN-PC-294 | Construct headwalls/wing walls (if needed) Box culvert for Rainwater Drainage Network Zone 3 | 2026-11-15 → 2026-11-22 (+7d) | 2026-11-29 → 2026-12-06 (+7d) | -116.56d → -122.56d |
| MOD-RWN-PC-304 | Backfilling and compaction Box culvert for Rainwater Drainage Network Zone 3 | 2026-11-29 → 2026-12-06 (+7d) | 2026-12-07 → 2026-12-14 (+7d) | -116.56d → -122.56d |
| MOD-RWN-PC-314 | Surface finishing Box culvert for Rainwater Drainage Network Zone 3 | 2026-12-07 → 2026-12-14 (+7d) | 2026-12-10 → 2026-12-17 (+7d) | -116.56d → -122.56d |
| 4 | **Manholes** | 2026-10-29 → 2026-11-05 (+7d) | 2026-12-10 → 2026-12-17 (+7d) |  |
| 1 | **Circular GRP Manholes (1200–1800mm dia)** | 2026-10-29 → 2026-11-05 (+7d) | 2026-12-06 → 2026-12-13 (+7d) |  |
| MOD-RWN-MH-234 | Excavate to full manhole depth Circular Manhole for Rainwater Drainage Network Zone 3 | 2026-10-29 → 2026-11-05 (+7d) | 2026-11-07 → 2026-11-14 (+7d) | -112.56d → -118.56d |
| MOD-RWN-MH-244 | Dewatering and safety barriers Circular Manhole for Rainwater Drainage Network Zone 3 | 2026-11-07 → 2026-11-14 (+7d) | 2026-11-14 → 2026-11-21 (+7d) | -112.56d → -118.56d |
| MOD-RWN-MH-254 | Concrete base construction Circular Manhole for Rainwater Drainage Network Zone 3 | 2026-11-14 → 2026-11-21 (+7d) | 2026-11-16 → 2026-11-23 (+7d) | -112.56d → -118.56d |
| MOD-RWN-MH-264 | Install GRP manhole shaft sections Circular Manhole for Rainwater Drainage Network Zone 3 | 2026-11-16 → 2026-11-23 (+7d) | 2026-11-24 → 2026-12-01 (+7d) | -112.56d → -118.56d |
| MOD-RWN-MH-274 | Place slab and cover frame Circular Manhole for Rainwater Drainage Network Zone 3 | 2026-11-24 → 2026-12-01 (+7d) | 2026-12-01 → 2026-12-08 (+7d) | -112.56d → -118.56d |
| MOD-RWN-MH-284 | Waterproofing Circular Manhole for Rainwater Drainage Network Zone 3 | 2026-12-01 → 2026-12-08 (+7d) | 2026-12-03 → 2026-12-10 (+7d) | -112.56d → -118.56d |
| MOD-RWN-MH-294 | Backfilling and compaction Circular Manhole for Rainwater Drainage Network Zone 3 | 2026-12-03 → 2026-12-10 (+7d) | 2026-12-06 → 2026-12-13 (+7d) | -112.56d → -118.56d |
| 3 | **Concrete Manholes for 1500x1500 Box Pipes** | 2026-10-29 → 2026-11-05 (+7d) | 2026-12-06 → 2026-12-13 (+7d) |  |
| MOD-RWN-MH-374 | Excavation Concrete Manhole 1.5x1.5 for Rainwater Drainage Network Zone 3 | 2026-10-29 → 2026-11-05 (+7d) | 2026-11-05 → 2026-11-12 (+7d) | -112.56d → -118.56d |
| MOD-RWN-MH-384 | Base slab and wall shuttering Concrete Manhole 1.5x1.5 for Rainwater Drainage Network Zone 3 | 2026-11-05 → 2026-11-12 (+7d) | 2026-11-10 → 2026-11-17 (+7d) | -112.56d → -118.56d |
| MOD-RWN-MH-394 | Wall reinforcement and casting Concrete Manhole 1.5x1.5 for Rainwater Drainage Network Zone 3 | 2026-11-10 → 2026-11-17 (+7d) | 2026-11-19 → 2026-11-26 (+7d) | -112.56d → -118.56d |
| MOD-RWN-MH-404 | Roof slab with openings Concrete Manhole 1.5x1.5 for Rainwater Drainage Network Zone 3 | 2026-11-19 → 2026-11-26 (+7d) | 2026-11-24 → 2026-12-01 (+7d) | -112.56d → -118.56d |
| MOD-RWN-MH-414 | Masonry/benching works inside Concrete Manhole 1.5x1.5 for Rainwater Drainage Network Zone 3 | 2026-11-24 → 2026-12-01 (+7d) | 2026-11-30 → 2026-12-07 (+7d) | -112.56d → -118.56d |
| MOD-RWN-MH-424 | Install cover and frame Concrete Manhole 1.5x1.5 for Rainwater Drainage Network Zone 3 | 2026-11-30 → 2026-12-07 (+7d) | 2026-12-02 → 2026-12-09 (+7d) | -112.56d → -118.56d |

| ID | Task | Start | Finish | Total float |
| --- | --- | --- | --- | --- |
| MOD-RWN-MH-434 | Backfill in layers Concrete Manhole 1.5x1.5 for Rainwater Drainage Network Zone 3 | 2026-12-02 → 2026-12-09 (+7d) | 2026-12-06 → 2026-12-13 (+7d) | -112.56d → -118.56d |
| 2 | **Concrete Manholes for 1000x1000 Box Pipes** | 2026-10-29 → 2026-11-05 (+7d) | 2026-12-10 → 2026-12-17 (+7d) |  |
| MOD-RWN-MH-304 | Excavation Concrete Manhole 1x1 for Rainwater Drainage Network Zone 3 | 2026-10-29 → 2026-11-05 (+7d) | 2026-11-05 → 2026-11-12 (+7d) | -116.56d → -122.56d |
| MOD-RWN-MH-314 | Base slab and wall shuttering Concrete Manhole 1x1 for Rainwater Drainage Network Zone 3 | 2026-11-05 → 2026-11-12 (+7d) | 2026-11-10 → 2026-11-17 (+7d) | -116.56d → -122.56d |
| MOD-RWN-MH-324 | Wall reinforcement and casting Concrete Manhole 1x1 for Rainwater Drainage Network Zone 3 | 2026-11-10 → 2026-11-17 (+7d) | 2026-11-17 → 2026-11-24 (+7d) | -116.56d → -122.56d |
| MOD-RWN-MH-334 | Roof slab with openings Concrete Manhole 1x1 for Rainwater Drainage Network Zone 3 | 2026-11-17 → 2026-11-24 (+7d) | 2026-11-22 → 2026-11-29 (+7d) | -116.56d → -122.56d |
| MOD-RWN-MH-344 | Masonry/benching works inside Concrete Manhole 1x1 for Rainwater Drainage Network Zone 3 | 2026-11-22 → 2026-11-29 (+7d) | 2026-11-30 → 2026-12-07 (+7d) | -116.56d → -122.56d |
| MOD-RWN-MH-354 | Install cover and frame Concrete Manhole 1x1 for Rainwater Drainage Network Zone 3 | 2026-11-30 → 2026-12-07 (+7d) | 2026-12-05 → 2026-12-12 (+7d) | -116.56d → -122.56d |
| MOD-RWN-MH-364 | Backfill in layers Concrete Manhole 1x1 for Rainwater Drainage Network Zone 3 | 2026-12-05 → 2026-12-12 (+7d) | 2026-12-10 → 2026-12-17 (+7d) | -116.56d → -122.56d |
| 2 | **Chambers and Catch Basins** |  | 2026-11-04 → 2026-11-11 (+7d) |  |
| 1 | **Gully Outfalls** |  | 2026-10-31 → 2026-11-07 (+7d) |  |
| MOD-RWN-CC-198 | Provide slope protection (riprap) Gully Outfall for Rainwater Drainage Network Zone 3 |  | 2026-10-29 → 2026-11-05 (+7d) | -81.72d → -87.72d |
| MOD-RWN-CC-208 | Compact and shape terrain Gully Outfall for Rainwater Drainage Network Zone 3 |  | 2026-10-31 → 2026-11-07 (+7d) | -81.72d → -87.72d |
| 2 | **Rainwater Catch Basins** |  | 2026-10-29 → 2026-11-05 (+7d) |  |
| MOD-RWN-CC-258 | Backfill and surface finish Catch Basin for Rainwater Drainage Network Zone 3 |  | 2026-10-29 → 2026-11-05 (+7d) | -80.68d → -86.68d |
| 3 | **Precast Chambers for Absorption Pits** |  | 2026-11-04 → 2026-11-11 (+7d) |  |
| MOD-RWN-CC-308 | Backfill and compact Absorption Pit for Rainwater Drainage Network Zone 3 | 2026-10-29 → 2026-11-05 (+7d) | 2026-11-04 → 2026-11-11 (+7d) | -85.56d → -91.56d |
| 3 | **Gully Outfalls to Swales** |  | 2026-11-19 → 2026-11-26 (+7d) |  |
| 1 | **Gully Outfalls to Swales** |  | 2026-11-03 → 2026-11-10 (+7d) |  |
| MOD-RWN-GO-111 | Excavate outfall channel Gully Outfall to Swales for Rainwater Drainage Network Zone 3 |  | 2026-10-29 → 2026-11-05 (+7d) | -84.56d → -90.56d |
| MOD-RWN-GO-121 | Place concrete apron or pipes Gully Outfall to Swales for Rainwater Drainage Network Zone 3 |  | 2026-10-31 → 2026-11-07 (+7d) | -84.56d → -90.56d |
| MOD-RWN-GO-131 | Provide slope protection (riprap) Gully Outfall to Swales for Rainwater Drainage Network Zone 3 |  | 2026-11-01 → 2026-11-08 (+7d) | -84.56d → -90.56d |
| MOD-RWN-GO-141 | Compact and shape terrain Gully Outfall to Swales for Rainwater Drainage Network Zone 3 | 2026-11-01 → 2026-11-08 (+7d) | 2026-11-03 → 2026-11-10 (+7d) | -84.56d → -90.56d |
| 2 | **Riprap Works & Protection** | 2026-10-29 → 2026-11-05 (+7d) | 2026-11-19 → 2026-11-26 (+7d) |  |
| MOD-RWN-GO-151 | Lay filter fabric/membrane for Rainwater Drainage Network Zone 3 | 2026-10-29 → 2026-11-05 (+7d) | 2026-11-02 → 2026-11-09 (+7d) | -98.56d → -104.56d |
| MOD-RWN-GO-161 | Place riprap/stone layer for Rainwater Drainage Network Zone 3 | 2026-11-02 → 2026-11-09 (+7d) | 2026-11-14 → 2026-11-21 (+7d) | -98.56d → -104.56d |
| MOD-RWN-GO-171 | Compact edges for Rainwater Drainage Network Zone 3 | 2026-11-14 → 2026-11-21 (+7d) | 2026-11-17 → 2026-11-24 (+7d) | -98.56d → -104.56d |
| MOD-RWN-GO-181 | Ensure hydraulic flow direction for Rainwater Drainage Network Zone 3 | 2026-11-17 → 2026-11-24 (+7d) | 2026-11-19 → 2026-11-26 (+7d) | -98.56d → -104.56d |
| 6 | **Backfilling & Bedding** |  | 2026-11-09 → 2026-11-16 (+7d) |  |
| 1 | **Backfilling Materials (Type A – 201–700mm Pipes)** |  | 2026-10-18 → 2026-10-25 (+7d) |  |
| MOD-RWN-BB-112 | Place granular bedding under pipe for Rainwater Drainage Network Zone 3 |  | 2026-10-17 → 2026-10-24 (+7d) | -70.65d → -76.65d |
| MOD-RWN-BB-122 | Lay and align pipe for Rainwater Drainage Network Zone 3 |  | 2026-10-17 → 2026-10-24 (+7d) | -70.65d → -76.65d |
| MOD-RWN-BB-132 | Backfill up to spring line for Rainwater Drainage Network Zone 3 |  | 2026-10-18 → 2026-10-25 (+7d) | -70.65d → -76.65d |
| MOD-RWN-BB-142 | Compact layer-wise for Rainwater Drainage Network Zone 3 |  | 2026-10-18 → 2026-10-25 (+7d) | -70.65d → -76.65d |
| MOD-RWN-BB-152 | Final fill to subgrade level for Rainwater Drainage Network Zone 3 |  | 2026-10-18 → 2026-10-25 (+7d) | -70.65d → -76.65d |
| 2 | **Gravel Bedding & Filter Cloth for uPVC Drain Pipes** |  | 2026-11-09 → 2026-11-16 (+7d) |  |
| MOD-RWN-BB-162 | Line trench with filter cloth for Rainwater Drainage Network Zone 3 |  | 2026-10-17 → 2026-10-24 (+7d) | -89.56d → -95.56d |
| MOD-RWN-BB-172 | Place and compact gravel bedding for Rainwater Drainage Network Zone 3 |  | 2026-10-18 → 2026-10-25 (+7d) | -89.56d → -95.56d |
| MOD-RWN-BB-182 | Lay pipe within gravel zone for Rainwater Drainage Network Zone 3 |  | 2026-10-20 → 2026-10-27 (+7d) | -89.56d → -95.56d |
| MOD-RWN-BB-192 | Wrap filter cloth above pipe for Rainwater Drainage Network Zone 3 |  | 2026-10-26 → 2026-11-02 (+7d) | -89.56d → -95.56d |
| MOD-RWN-BB-202 | Final fill and trench restoration for Rainwater Drainage Network Zone 3 | 2026-10-26 → 2026-11-02 (+7d) | 2026-11-09 → 2026-11-16 (+7d) | -89.56d → -95.56d |
| 7 | **Deep Basin for Groundwater Collection (2.5–3.0m)** |  | 2026-11-09 → 2026-11-16 (+7d) |  |
| MOD-RWN-DB-002 | Base and side wall construction (cast-in-situ or precast) for Rainwater Drainage Network Zone 3 |  | 2026-10-18 → 2026-10-25 (+7d) | -89.71d → -95.71d |
| MOD-RWN-DB-003 | Pipe connections for inflow for Rainwater Drainage Network Zone 3 |  | 2026-10-20 → 2026-10-27 (+7d) | -89.71d → -95.71d |
| MOD-RWN-DB-004 | Cover slab and access shaft for Rainwater Drainage Network Zone 3 |  | 2026-10-24 → 2026-10-31 (+7d) | -89.71d → -95.71d |
| MOD-RWN-DB-005 | Waterproofing & sealant for Rainwater Drainage Network Zone 3 |  | 2026-11-01 → 2026-11-08 (+7d) | -89.71d → -95.71d |
| MOD-RWN-DB-006 | Backfill in controlled layers for Rainwater Drainage Network Zone 3 | 2026-11-01 → 2026-11-08 (+7d) | 2026-11-09 → 2026-11-16 (+7d) | -89.71d → -95.71d |
| 13 | **Potable Water Network Zone 3** |  | 2027-01-05 → 2027-01-12 (+7d) |  |
| 13 | **Pipe Installation Works** |  | 2026-10-27 → 2026-11-03 (+7d) |  |
| MOD-PWN-PI-323 | Lean Concrete / Pipe Bedding Preparation for Potable Water Network Zone 3 |  | 2026-10-18 → 2026-10-25 (+7d) | 65.15d → 58.15d |
| MOD-PWN-PI-333 | HDPE Pipe Laying (200 mm to 710 mm) for Potable Water Network Zone 3 |  | 2026-10-22 → 2026-10-29 (+7d) | 65.15d → 58.15d |
| MOD-PWN-PI-343 | Test (Pressure-slope) for Potable Water Network Zone 3 |  | 2026-10-23 → 2026-10-30 (+7d) | 65.15d → 58.15d |
| MOD-PWN-PI-353 | Coating / Wrapping for Potable Water Network Zone 3 |  | 2026-10-25 → 2026-11-01 (+7d) | 65.15d → 58.15d |
| MOD-PWN-PI-363 | Backfilling & Warrning Tape for Potable Water Network Zone 3 |  | 2026-10-27 → 2026-11-03 (+7d) | 65.15d → 58.15d |
| 2 | **Valve Installation & Chambers** |  | 2026-11-09 → 2026-11-16 (+7d) |  |
| MOD-PWN-VC-87 | Butterfly Valves (355, 500, 630 mm) for Potable Water Network Zone 3 |  | 2026-10-17 → 2026-10-24 (+7d) | 45.06d → 39.06d |
| MOD-PWN-VC-97 | 3-exit (2 x 2.5-inch and 1 x 4-inch) dry vacuum cylinder detachable fire nozzle for Potable Water Network Zone 3 |  | 2026-10-17 → 2026-10-24 (+7d) | 45.06d → 39.06d |
| MOD-PWN-VC-107 | Valve Chamber Excavation for Potable Water Network Zone 3 |  | 2026-10-17 → 2026-10-24 (+7d) | 45.06d → 39.06d |
| MOD-PWN-VC-117 | RC Slab, Walls, or Precast Chambers for Potable Water Network Zone 3 |  | 2026-10-17 → 2026-10-24 (+7d) | 45.06d → 39.06d |
| MOD-PWN-VC-77 | Gate Valves (225–710 mm) for Potable Water Network Zone 3 |  | 2026-10-17 → 2026-10-24 (+7d) | 45.06d → 39.06d |
| MOD-PWN-VC-127 | Fixing Covers, Gratings, Frames for Potable Water Network Zone 3 | 2026-10-17 → 2026-10-24 (+7d) | 2026-11-02 → 2026-11-09 (+7d) | 45.06d → 39.06d |
| MOD-PWN-VC-137 | Tagging & Painting for Potable Water Network Zone 3 | 2026-11-02 → 2026-11-09 (+7d) | 2026-11-09 → 2026-11-16 (+7d) | 45.06d → 39.06d |
| 3 | **Flow Meter Installation** |  | 2026-11-28 → 2026-12-05 (+7d) |  |
| MOD-PWN-FM-55 | Chamber Excavation (280 mm, 300 mm, 500 mm, 800 mm) for Potable Water Network Zone 3 |  | 2026-10-17 → 2026-10-24 (+7d) | 48.4d → 42.4d |
| MOD-PWN-FM-65 | RC or Precast Chamber Construction for Potable Water Network Zone 3 |  | 2026-10-21 → 2026-10-28 (+7d) | 48.4d → 42.4d |
| MOD-PWN-FM-75 | Flowmeter Installation & Pipe Integration for Potable Water Network Zone 3 |  | 2026-11-18 → 2026-11-25 (+7d) | 29.35d → 23.35d |
| MOD-PWN-FM-85 | Wiring/Cabling if applicable for Potable Water Network Zone 3 |  | 2026-11-24 → 2026-12-01 (+7d) | 29.35d → 23.35d |
| MOD-PWN-FM-95 | Calibration & Commissioning for Potable Water Network Zone 3 | 2026-11-24 → 2026-12-01 (+7d) | 2026-11-28 → 2026-12-05 (+7d) | 29.35d → 23.35d |
| 4 | **Washout & Air Valve Chambers** |  | 2026-10-22 → 2026-10-29 (+7d) |  |
| MOD-PWN-WA-87 | RC Blinding + Base + Walls for Potable Water Network Zone 3 |  | 2026-10-17 → 2026-10-24 (+7d) | 59.66d → 53.94d |

| ID | Task | Start | Finish | Total float |
| --- | --- | --- | --- | --- |
| MOD-PWN-WA-97 | Pipe Work for Potable Water Network Zone 3 |  | 2026-10-18 → 2026-10-25 (+7d) | 59.66d → 53.94d |
| MOD-PWN-WA-107 | Washout (Valve + Outlet) Installation for Potable Water Network Zone 3 |  | 2026-10-19 → 2026-10-26 (+7d) | 59.66d → 53.94d |
| MOD-PWN-WA-117 | Air Valve Rooms (Valve + Outlet) Installation for Potable Water Network Zone 3 |  | 2026-10-20 → 2026-10-27 (+7d) | 59.66d → 53.94d |
| MOD-PWN-WA-127 | Covers, Ladders & Tags for Potable Water Network Zone 3 |  | 2026-10-20 → 2026-10-27 (+7d) | 59.66d → 53.94d |
| MOD-PWN-WA-137 | Backfilling & Final Finishing for Potable Water Network Zone 3 | 2026-10-20 → 2026-10-27 (+7d) | 2026-10-22 → 2026-10-29 (+7d) | 59.66d → 53.94d |
| 5 | **Pumping Station (Structure & Civil Works)** | 2026-10-17 → 2026-10-24 (+7d) | 2026-12-31 → 2027-01-07 (+7d) |  |
| MOD-PWN-PS-66 | Excavation & Blinding for Potable Water Network Zone 3 | 2026-10-17 → 2026-10-24 (+7d) | 2026-10-27 → 2026-11-03 (+7d) | -3.8d → -9.8d |
| MOD-PWN-PS-76 | Reinforced Concrete/GRP Shell Construction for Potable Water Network Zone 3 | 2026-10-28 → 2026-11-04 (+7d) | 2026-11-05 → 2026-11-12 (+7d) | -3.8d → -9.8d |
| MOD-PWN-PS-86 | Access Ladders, Tight Cover, Surface Guttering for Potable Water Network Zone 3 | 2026-11-07 → 2026-11-14 (+7d) | 2026-11-11 → 2026-11-18 (+7d) | -3.8d → -9.8d |
| MOD-PWN-PS-96 | Internal piping & embedded sleeves for Potable Water Network Zone 3 | 2026-11-12 → 2026-11-19 (+7d) | 2026-11-26 → 2026-12-03 (+7d) | -3.8d → -9.8d |
| MOD-PWN-PS-106 | Pump Base Pads + Grouting for Potable Water Network Zone 3 | 2026-11-28 → 2026-12-05 (+7d) | 2026-12-12 → 2026-12-19 (+7d) | -0.6d → -6.6d |
| MOD-PWN-PS-116 | Backfilling & External Finishes for Potable Water Network Zone 3 | 2026-12-13 → 2026-12-20 (+7d) | 2026-12-31 → 2027-01-07 (+7d) | -0.6d → -6.6d |
| 6 | **Pump Station Building** | 2026-11-28 → 2026-12-05 (+7d) | 2027-01-02 → 2027-01-09 (+7d) |  |
| MOD-PWN-PB-33 | Structure Construction (as per architectural drawings) for Potable Water Network Zone 3 | 2026-11-28 → 2026-12-05 (+7d) | 2026-12-12 → 2026-12-19 (+7d) | -3.8d → -9.8d |
| MOD-PWN-PB-43 | 5-ton Hoist Installation for Potable Water Network Zone 3 | 2026-12-13 → 2026-12-20 (+7d) | 2026-12-17 → 2026-12-24 (+7d) | -3.8d → -9.8d |
| MOD-PWN-PB-53 | Finishes, Doors, Ventilation for Potable Water Network Zone 3 | 2026-12-19 → 2026-12-26 (+7d) | 2027-01-02 → 2027-01-09 (+7d) | -3.8d → -9.8d |
| 7 | **Pumping Equipment & Fire Systems** | 2026-11-28 → 2026-12-05 (+7d) | 2026-12-29 → 2027-01-05 (+7d) |  |
| MOD-PWN-PE-88 | Main Pumps (250 kW, 295 L/s @ 60 m head) for Potable Water Network Zone 3 | 2026-11-28 → 2026-12-05 (+7d) | 2026-12-13 → 2026-12-20 (+7d) | 1.4d → -4.6d |
| MOD-PWN-PE-108 | Diesel Fire Water Pump (64 L/s @ 60 m) for Potable Water Network Zone 3 | 2026-12-14 → 2026-12-21 (+7d) | 2026-12-20 → 2026-12-27 (+7d) | 1.4d → -4.6d |
| MOD-PWN-PE-118 | Electric Jockey Pump for Potable Water Network Zone 3 | 2026-12-14 → 2026-12-21 (+7d) | 2026-12-20 → 2026-12-27 (+7d) | 1.4d → -4.6d |
| MOD-PWN-PE-128 | Submersible Fire Pumps (2 pcs, 10 L/s @ 10 m) for Potable Water Network Zone 3 | 2026-12-14 → 2026-12-21 (+7d) | 2026-12-17 → 2026-12-24 (+7d) | 1.4d → -4.6d |
| MOD-PWN-PE-98 | Electric Fire Water Pump (64 L/s @ 60 m) for Potable Water Network Zone 3 | 2026-12-14 → 2026-12-21 (+7d) | 2026-12-22 → 2026-12-29 (+7d) | 1.4d → -4.6d |
| MOD-PWN-PE-138 | Pipework connections within Pump Room for Potable Water Network Zone 3 | 2026-12-19 → 2026-12-26 (+7d) | 2026-12-23 → 2026-12-30 (+7d) | 1.4d → -4.6d |
| MOD-PWN-PE-148 | MCC & DB panel installation for Potable Water Network Zone 3 | 2026-12-24 → 2026-12-31 (+7d) | 2026-12-26 → 2027-01-02 (+7d) | 1.4d → -4.6d |
| MOD-PWN-PE-158 | Flow meter on 800mm pipe including flow meter chamber and 2-2.5m depth for Potable Water Network Zone 3 | 2026-12-27 → 2027-01-03 (+7d) | 2026-12-29 → 2027-01-05 (+7d) | 1.4d → -4.6d |
| 8 | **Surge Protection** | 2026-12-24 → 2026-12-31 (+7d) | 2026-12-29 → 2027-01-05 (+7d) |  |
| MOD-PWN-SP-22 | Surge Vessel Installation for Potable Water Network Zone 3 | 2026-12-24 → 2026-12-31 (+7d) | 2026-12-28 → 2027-01-04 (+7d) | 1.4d → -4.6d |
| MOD-PWN-SP-32 | Pipe Integration as per Surge Analysis for Potable Water Network Zone 3 | 2026-12-29 → 2027-01-05 (+7d) | 2026-12-29 → 2027-01-05 (+7d) | 1.4d → -4.6d |
| 9 | **Power & Generator System** | 2026-12-14 → 2026-12-21 (+7d) | 2026-12-27 → 2027-01-03 (+7d) |  |
| MOD-PWN-PG-44 | 500 kVA Standby Generator Installation for Potable Water Network Zone 3 | 2026-12-14 → 2026-12-21 (+7d) | 2026-12-17 → 2026-12-24 (+7d) | 3.4d → -2.6d |
| MOD-PWN-PG-54 | Canopy, Foundation & Fuel Tank for Potable Water Network Zone 3 | 2026-12-14 → 2026-12-21 (+7d) | 2026-12-20 → 2026-12-27 (+7d) | 3.4d → -2.6d |
| MOD-PWN-PG-64 | Electrical Cabling, Circuit Breakers for Potable Water Network Zone 3 | 2026-12-21 → 2026-12-28 (+7d) | 2026-12-24 → 2026-12-31 (+7d) | 3.4d → -2.6d |
| MOD-PWN-PG-74 | Earthing & Commissioning for Potable Water Network Zone 3 | 2026-12-26 → 2027-01-02 (+7d) | 2026-12-27 → 2027-01-03 (+7d) | 3.4d → -2.6d |
| 10 | **Chlorination System** | 2026-12-14 → 2026-12-21 (+7d) | 2026-12-29 → 2027-01-05 (+7d) |  |
| MOD-PWN-CS-33 | Chlorination Device Supply & Installation for Potable Water Network Zone 3 | 2026-12-14 → 2026-12-21 (+7d) | 2026-12-21 → 2026-12-28 (+7d) | 1.4d → -4.6d |
| MOD-PWN-CS-43 | Connections to Main Line or Disinfection Chamber for Potable Water Network Zone 3 | 2026-12-22 → 2026-12-29 (+7d) | 2026-12-26 → 2027-01-02 (+7d) | 1.4d → -4.6d |
| MOD-PWN-CS-53 | Control Integration for Potable Water Network Zone 3 | 2026-12-27 → 2027-01-03 (+7d) | 2026-12-29 → 2027-01-05 (+7d) | 1.4d → -4.6d |
| 11 | **Water Storage System** |  | 2027-01-05 → 2027-01-12 (+7d) |  |
| MOD-PWN-WS-11 | Structural tanks for supply or pressure equalization for Potable Water Network Zone 3 |  | 2027-01-05 → 2027-01-12 (+7d) | -3.8d → -9.8d |
| 12 | **Street Lighting** |  | 2026-12-20 → 2026-12-27 (+7d) |  |
| MOD-PWN-SL-75 | Pole & Fixture Installation for Potable Water Network Zone 3 |  | 2026-12-13 → 2026-12-20 (+7d) | 10.24d → 4.24d |
| MOD-PWN-SL-65 | Conduits, Cabling, Backfilling for Potable Water Network Zone 3 |  | 2026-12-13 → 2026-12-20 (+7d) | 10.24d → 4.24d |
| MOD-PWN-SL-85 | Connection to Main Supply for Potable Water Network Zone 3 | 2026-12-13 → 2026-12-20 (+7d) | 2026-12-20 → 2026-12-27 (+7d) | 10.24d → 4.24d |
| MOD-PWN-SL-95 | Testing & Lighting Commissioning for Potable Water Network Zone 3 | 2026-12-13 → 2026-12-20 (+7d) | 2026-12-20 → 2026-12-27 (+7d) | 10.24d → 4.24d |
| 6 | **Irrigation Network Zone 3** |  | 2026-11-22 → 2026-11-29 (+7d) |  |
| 1 | **Excavation, Pipe Laying & Backfilling** |  | 2026-10-23 → 2026-10-30 (+7d) |  |
| MOD-IRN-EB-120 | Trench Excavation for Irrigation Network Zone 3 |  | 2026-10-19 → 2026-10-26 (+7d) | 68.48d → 61.48d |
| MOD-IRN-EB-130 | Lean Concrete / Pipe Bedding with Type B Material for Irrigation Network Zone 3 |  | 2026-10-19 → 2026-10-26 (+7d) | 68.48d → 61.48d |
| MOD-IRN-EB-140 | HDPE Pipe Laying (125 mm to 630 mm) for Irrigation Network Zone 3 |  | 2026-10-22 → 2026-10-29 (+7d) | 68.48d → 61.48d |
| MOD-IRN-EB-150 | Test (Pressure-slope) for Irrigation Network Zone 3 |  | 2026-10-22 → 2026-10-29 (+7d) | 68.48d → 61.48d |
| MOD-IRN-EB-180 | Coating / Wrapping for Irrigation Network Zone 3 |  | 2026-10-22 → 2026-10-29 (+7d) | 68.48d → 61.48d |
| MOD-IRN-EB-190 | Backfilling & Warrning Tape for Irrigation Network Zone 3 |  | 2026-10-23 → 2026-10-30 (+7d) | 68.48d → 61.48d |
| 2 | **Valves and Appurtenances** |  | 2026-10-20 → 2026-10-27 (+7d) |  |
| MOD-IRN-VA-65 | Supply & Installation of Valves (Butterfly Valve) for Irrigation Network Zone 3 |  | 2026-10-18 → 2026-10-25 (+7d) | 62d → 56d |
| MOD-IRN-VA-75 | Installation of Flanges, Bolts, Collars, Nuts for Irrigation Network Zone 3 |  | 2026-10-19 → 2026-10-26 (+7d) | 62d → 56d |
| MOD-IRN-VA-85 | Valve Pressure Testing for Irrigation Network Zone 3 |  | 2026-10-19 → 2026-10-26 (+7d) | 62d → 56d |
| MOD-IRN-VA-95 | Support Brackets/Anchor Blocks for Irrigation Network Zone 3 |  | 2026-10-20 → 2026-10-27 (+7d) | 62d → 56d |
| 3 | **Valve Rooms** |  | 2026-10-17 → 2026-10-24 (+7d) |  |
| MOD-IRN-VR-137 | Backfilling and Finishing Valve Chamber for Irrigation Network Zone 3 |  | 2026-10-17 → 2026-10-24 (+7d) | 65.1d → 59.1d |
| 4 | **Washout Chambers** |  | 2026-10-18 → 2026-10-25 (+7d) |  |
| MOD-IRN-WC-96 | Washout Valve & Pipe Connection Washout Chamber for Irrigation Network Zone 3 |  | 2026-10-17 → 2026-10-24 (+7d) | 64.1d → 58.1d |
| MOD-IRN-WC-106 | Manhole Frame, Cover & Ladder Fixing Washout Chamber for Irrigation Network Zone 3 |  | 2026-10-17 → 2026-10-24 (+7d) | 64.1d → 58.1d |
| MOD-IRN-WC-116 | Backfilling & Reinstatement Washout Chamber for Irrigation Network Zone 3 |  | 2026-10-18 → 2026-10-25 (+7d) | 64.1d → 58.1d |
| 5 | **Air Valve Chambers** |  | 2026-10-17 → 2026-10-24 (+7d) |  |
| MOD-IRN-AC-95 | Cover Fixing & Finishing Air Valve Chamber for Irrigation Network Zone 3 |  | 2026-10-17 → 2026-10-24 (+7d) | 65.3d → 59.3d |
| 6 | **Flow Meter Chambers** |  | 2026-11-22 → 2026-11-29 (+7d) |  |
| MOD-IRN-FC-76 | RCC Base & Wall Construction Flow Meter Chamber for Irrigation Network Zone 3 |  | 2026-10-17 → 2026-10-24 (+7d) | 56d → 50d |
| MOD-IRN-FC-86 | Flow Meter Installation (280, 300, 500 mm) Flow Meter Chamber for Irrigation Network Zone 3 |  | 2026-11-14 → 2026-11-21 (+7d) | 33.55d → 27.55d |
| MOD-IRN-FC-96 | Integration with Pipework Flow Meter Chamber for Irrigation Network Zone 3 |  | 2026-11-15 → 2026-11-22 (+7d) | 33.55d → 27.55d |
| MOD-IRN-FC-106 | Testing & Calibration Flow Meter Chamber for Irrigation Network Zone 3 |  | 2026-11-17 → 2026-11-24 (+7d) | 33.55d → 27.55d |

| ID | Task | Start | Finish | Complete | Total float |
| --- | --- | --- | --- | --- | --- |
| MOD-IRN-FC-116 | Cover and Access Arrangement Flow Meter Chamber for Irrigation Network Zone 3 | 2026-11-17 → 2026-11-24 (+7d) | 2026-11-22 → 2026-11-29 (+7d) |  | 33.55d → 27.55d |
| 2 | **Backfilling Works** |  | 2027-01-21 → 2027-01-18 (-3d) |  |  |
| MOD-RCP-BW-75 | Compact each layer to required density for Rainwater Collection Ponds Zone 3 |  | 2027-01-14 → 2027-01-12 (-2d) |  | 80.98d → 83.8d |
| MOD-RCP-BW-85 | Conduct field density tests for Rainwater Collection Ponds Zone 3 |  | 2027-01-16 → 2027-01-12 (-4d) |  | 80.98d → 83.8d |
| MOD-RCP-BW-95 | Final leveling and approval for Rainwater Collection Ponds Zone 3 | 2027-01-16 → 2027-01-12 (-4d) | 2027-01-21 → 2027-01-18 (-3d) |  | 80.98d → 83.8d |
| 5 | **Sewerage Network Zone 2** |  | 2026-12-22 → 2026-12-28 (+6d) |  |  |
| 1 | **Pipework: Supply, Installation, and Testing** |  | 2026-12-09 → 2026-12-16 (+7d) |  |  |
| 3 | **HDPE Pressure Pipes Installation (250mm–630mm)** |  | 2026-12-09 → 2026-12-16 (+7d) |  |  |
| MOD-SWN-PW-585 | Excavation and Trenching HDPE for Sewerage Network Zone 2 |  | 2026-10-21 → 2026-10-28 (+7d) |  | 80.1d → 73.1d |
| MOD-SWN-PW-595 | Lean Concrete / Bedding HDPE for Sewerage Network Zone 2 |  | 2026-10-29 → 2026-11-05 (+7d) |  | 80.1d → 73.1d |
| MOD-SWN-PW-465 | HDPE Pressure Pipes Installation (250mm–630mm) HDPE for Sewerage Network Zone 2 |  | 2026-11-09 → 2026-11-16 (+7d) |  | 80.1d → 73.1d |
| MOD-SWN-PW-605 | Test (Pressure - Slope) HDPE for Sewerage Network Zone 2 |  | 2026-11-16 → 2026-11-23 (+7d) |  | 98.7d → 91.7d |
| MOD-SWN-PW-615 | Coating / Wrapping HDPE for Sewerage Network Zone 2 |  | 2026-11-24 → 2026-12-01 (+7d) |  | 98.7d → 91.7d |
| MOD-SWN-PW-575 | Backfilling & Warrning Tape HDPE for Sewerage Network Zone 2 | 2026-11-25 → 2026-12-02 (+7d) | 2026-12-09 → 2026-12-16 (+7d) |  | 98.7d → 91.7d |
| 2 | **Fittings and Valves** | 2026-11-09 → 2026-11-16 (+7d) | 2026-12-10 → 2026-12-17 (+7d) |  |  |
| MOD-SWN-FV-5 | Supply & Installation of HDPE Elbows for Sewerage Network Zone 2 | 2026-11-09 → 2026-11-16 (+7d) | 2026-11-16 → 2026-11-23 (+7d) |  | 69.1d → 63.1d |
| MOD-SWN-FV-15 | Gate Valves Installation for Sewerage Network Zone 2 | 2026-11-16 → 2026-11-23 (+7d) | 2026-11-21 → 2026-11-28 (+7d) |  | 69.1d → 63.1d |
| MOD-SWN-FV-25 | Drain Valves Installation for Sewerage Network Zone 2 | 2026-11-21 → 2026-11-28 (+7d) | 2026-11-25 → 2026-12-02 (+7d) |  | 69.1d → 63.1d |
| MOD-SWN-FV-35 | Air Breather & Air Release Valves Installation for Sewerage Network Zone 2 | 2026-11-25 → 2026-12-02 (+7d) | 2026-12-07 → 2026-12-14 (+7d) |  | 69.1d → 63.1d |
| MOD-SWN-FV-45 | Jointing & Piping Accessories Installation for Sewerage Network Zone 2 | 2026-12-07 → 2026-12-14 (+7d) | 2026-12-10 → 2026-12-17 (+7d) |  | 69.1d → 63.1d |
| 3 | **Valve & Flow Meter Chambers** |  | 2026-12-22 → 2026-12-28 (+6d) |  |  |
| 1 | **Valve Chambers Construction** |  | 2026-12-01 → 2026-12-07 (+6d) |  |  |
| MOD-SWN-PW-975 | Excavation Valve Chamber for Sewerage Network Zone 2 |  | 2026-10-21 → 2026-10-27 (+6d) | 80% → 82% | 86.1d → 80.27d |
| MOD-SWN-PW-985 | Lean Concrete / Bedding Valve Chamber for Sewerage Network Zone 2 |  | 2026-10-29 → 2026-11-04 (+6d) | 60% → 63% | 86.1d → 80.27d |
| MOD-SWN-VF-124 | Valve Chambers Construction Valve Chamber for Sewerage Network Zone 2 |  | 2026-11-01 → 2026-11-07 (+6d) | 50% → 52% | 86.1d → 80.27d |
| MOD-SWN-PW-995 | Test Valve Chamber for Sewerage Network Zone 2 | 2026-11-01 → 2026-11-07 (+6d) | 2026-11-16 → 2026-11-22 (+6d) |  | 107.1d → 101.27d |
| MOD-SWN-PW-965 | Backfilling Valve Chamber for Sewerage Network Zone 2 | 2026-11-16 → 2026-11-22 (+6d) | 2026-12-01 → 2026-12-07 (+6d) |  | 107.1d → 101.27d |
| 2 | **Water Drain Chambers Construction** |  | 2026-12-11 → 2026-12-16 (+5d) |  |  |
| MOD-SWN-PW-1015 | Excavation Water Drain Chamber for Sewerage Network Zone 2 |  | 2026-10-21 → 2026-10-28 (+7d) |  | 89.1d → 82.1d |
| MOD-SWN-PW-1025 | Lean Concrete / Bedding Water Drain Chamber for Sewerage Network Zone 2 |  | 2026-10-29 → 2026-11-05 (+7d) |  | 89.1d → 82.1d |
| MOD-SWN-VF-134 | Water Drain Chambers Construction Water Drain Chamber for Sewerage Network Zone 2 |  | 2026-11-11 → 2026-11-16 (+5d) |  | 86.1d → 80.27d |
| MOD-SWN-PW-1035 | Test Water Drain Chamber for Sewerage Network Zone 2 | 2026-11-11 → 2026-11-16 (+5d) | 2026-11-26 → 2026-12-01 (+5d) |  | 97.6d → 91.77d |
| MOD-SWN-PW-1005 | Backfilling Water Drain Chamber for Sewerage Network Zone 2 | 2026-11-26 → 2026-12-01 (+5d) | 2026-12-11 → 2026-12-16 (+5d) |  | 97.6d → 91.77d |
| 3 | **Discharge Chambers Construction** |  | 2026-12-17 → 2026-12-23 (+6d) |  |  |
| MOD-SWN-PW-1055 | Excavation Discharge Chamber for Sewerage Network Zone 2 |  | 2026-10-25 → 2026-11-01 (+7d) |  | 92.3d → 85.3d |
| MOD-SWN-PW-1065 | Lean Concrete / Bedding Discharge Chamber for Sewerage Network Zone 2 |  | 2026-11-04 → 2026-11-11 (+7d) |  | 92.3d → 85.3d |
| MOD-SWN-VF-144 | Discharge Chambers Construction Discharge Chamber for Sewerage Network Zone 2 |  | 2026-11-17 → 2026-11-23 (+6d) |  | 86.1d → 80.27d |
| MOD-SWN-PW-1075 | Test Discharge Chamber for Sewerage Network Zone 2 | 2026-11-17 → 2026-11-23 (+6d) | 2026-12-02 → 2026-12-08 (+6d) |  | 91.1d → 85.27d |
| MOD-SWN-PW-1045 | Backfilling Discharge Chamber for Sewerage Network Zone 2 | 2026-12-02 → 2026-12-08 (+6d) | 2026-12-17 → 2026-12-23 (+6d) |  | 91.1d → 85.27d |
| 4 | **Flow Meter Chambers Construction** |  | 2026-12-22 → 2026-12-28 (+6d) |  |  |
| MOD-SWN-PW-1095 | Excavation Flow Meter Chamber for Sewerage Network Zone 2 |  | 2026-10-25 → 2026-11-01 (+7d) |  | 96.7d → 89.7d |
| MOD-SWN-PW-1105 | Lean Concrete / Bedding Flow Meter Chamber for Sewerage Network Zone 2 |  | 2026-11-06 → 2026-11-13 (+7d) |  | 96.7d → 89.7d |
| MOD-SWN-VF-154 | Flow Meter Chambers Construction Flow Meter Chamber for Sewerage Network Zone 2 | 2026-11-17 → 2026-11-23 (+6d) | 2026-11-22 → 2026-11-28 (+6d) |  | 86.1d → 80.27d |
| MOD-SWN-PW-1115 | Test Flow Meter Chamber for Sewerage Network Zone 2 | 2026-11-22 → 2026-11-28 (+6d) | 2026-12-07 → 2026-12-13 (+6d) |  | 86.1d → 80.27d |
| MOD-SWN-PW-1085 | Backfilling Flow Meter Chamber for Sewerage Network Zone 2 | 2026-12-07 → 2026-12-13 (+6d) | 2026-12-22 → 2026-12-28 (+6d) |  | 86.1d → 80.27d |
| 4 | **Manholes** |  | 2026-11-28 → 2026-12-03 (+5d) |  |  |
| 1 | **1200mm GRP Manholes with Backdrop** |  | 2026-11-22 → 2026-11-28 (+6d) |  |  |
| MOD-SWN-PW-1455 | Excavation 1.2m GRP for Sewerage Network Zone 2 |  | 2026-10-18 → 2026-10-25 (+7d) |  | 110.49d → 105.42d |
| MOD-SWN-PW-1465 | Lean Concrete / Bedding 1.2m GRP for Sewerage Network Zone 2 |  | 2026-10-20 → 2026-10-27 (+7d) |  | 110.49d → 105.42d |
| MOD-SWN-MH-145 | 1200mm GRP Manholes with Backdrop 1.2m GRP for Sewerage Network Zone 2 |  | 2026-10-23 → 2026-10-29 (+6d) | 88% → 90% | 110.49d → 105.42d |
| MOD-SWN-PW-1475 | Test 1.2m GRP for Sewerage Network Zone 2 | 2026-10-23 → 2026-10-29 (+6d) | 2026-11-07 → 2026-11-13 (+6d) |  | 116.4d → 109.82d |
| MOD-SWN-PW-1445 | Backfilling 1.2m GRP for Sewerage Network Zone 2 | 2026-11-07 → 2026-11-13 (+6d) | 2026-11-22 → 2026-11-28 (+6d) |  | 116.4d → 109.82d |
| 2 | **1500mm GRP Manholes (Standard & Backdrop)** |  | 2026-11-25 → 2026-11-30 (+5d) |  |  |
| MOD-SWN-PW-1495 | Excavation 1.5m GRP for Sewerage Network Zone 2 |  | 2026-10-19 → 2026-10-26 (+7d) |  | 112.17d → 107.1d |
| MOD-SWN-PW-1505 | Lean Concrete / Bedding 1.5m GRP for Sewerage Network Zone 2 |  | 2026-10-21 → 2026-10-28 (+7d) | 88% → 90% | 112.17d → 107.1d |
| MOD-SWN-MH-155 | 1500mm GRP Manholes (Standard & Backdrop) 1.5m GRP for Sewerage Network Zone 2 |  | 2026-10-26 → 2026-10-31 (+5d) | 85% → 90% | 110.49d → 105.42d |
| MOD-SWN-PW-1515 | Test 1.5m GRP for Sewerage Network Zone 2 | 2026-10-26 → 2026-10-31 (+5d) | 2026-11-10 → 2026-11-15 (+5d) |  | 113.25d → 107.72d |
| MOD-SWN-PW-1485 | Backfilling 1.5m GRP for Sewerage Network Zone 2 | 2026-11-10 → 2026-11-15 (+5d) | 2026-11-25 → 2026-11-30 (+5d) |  | 113.25d → 107.72d |
| 3 | **1800mm GRP Manholes (Standard & Backdrop)** |  | 2026-11-27 → 2026-12-02 (+5d) |  |  |
| MOD-SWN-PW-1535 | Excavation 1.8m GRP for Sewerage Network Zone 2 |  | 2026-10-18 → 2026-10-25 (+7d) | 92% → 94% | 116.16d → 110.46d |
| MOD-SWN-PW-1545 | Lean Concrete / Bedding 1.8m GRP for Sewerage Network Zone 2 |  | 2026-10-20 → 2026-10-26 (+6d) | 90% → 92% | 116.16d → 110.46d |
| MOD-SWN-MH-165 | 1800mm GRP Manholes (Standard & Backdrop) 1.8m GRP for Sewerage Network Zone 2 |  | 2026-10-28 → 2026-11-02 (+5d) | 88% → 90% | 110.49d → 105.42d |
| MOD-SWN-PW-1555 | Test 1.8m GRP for Sewerage Network Zone 2 | 2026-10-28 → 2026-11-02 (+5d) | 2026-11-12 → 2026-11-17 (+5d) |  | 111.21d → 106.02d |
| MOD-SWN-PW-1525 | Backfilling 1.8m GRP for Sewerage Network Zone 2 | 2026-11-12 → 2026-11-17 (+5d) | 2026-11-27 → 2026-12-02 (+5d) |  | 111.21d → 106.02d |
| 4 | **2000mm GRP Manholes (Standard & Backdrop)** |  | 2026-11-28 → 2026-12-03 (+5d) |  |  |
| MOD-SWN-PW-1575 | Excavation 2m GRP for Sewerage Network Zone 2 |  | 2026-10-18 → 2026-10-25 (+7d) |  | 118.41d → 111.53d |
| MOD-SWN-PW-1585 | Lean Concrete / Bedding 2m GRP for Sewerage Network Zone 2 |  | 2026-10-20 → 2026-10-27 (+7d) |  | 118.41d → 111.53d |
| MOD-SWN-MH-175 | 2000mm GRP Manholes (Standard & Backdrop) 2m GRP for Sewerage Network Zone 2 |  | 2026-10-29 → 2026-11-03 (+5d) | 88% → 90% | 110.49d → 105.42d |
| MOD-SWN-PW-1595 | Test 2m GRP for Sewerage Network Zone 2 | 2026-10-29 → 2026-11-03 (+5d) | 2026-11-13 → 2026-11-18 (+5d) |  | 110.49d → 105.42d |
| MOD-SWN-PW-1565 | Backfilling 2m GRP for Sewerage Network Zone 2 | 2026-11-13 → 2026-11-18 (+5d) | 2026-11-28 → 2026-12-03 (+5d) |  | 110.49d → 105.42d |

| ID | Task | Start | Finish | Total float |
| --- | --- | --- | --- | --- |
| 6 | **Rainwater Drainage Network Zone 2** |  | 2026-11-24 → 2026-12-01 (+7d) |  |
| 1 | **Pipe Laying Works** |  | 2026-10-21 → 2026-10-28 (+7d) |  |
| 2 | **Supply & Installation of uPVC Pipes (250–300mm dia)** |  | 2026-10-18 → 2026-10-25 (+7d) |  |
| MOD-RWN-PL-753 | Laying of uPVC pipe UPVC for Rainwater Drainage Network Zone 2 |  | 2026-10-17 → 2026-10-24 (+7d) | -86.3d → -93.3d |
| MOD-RWN-PL-763 | Coating / Wrapping UPVC for Rainwater Drainage Network Zone 2 |  | 2026-10-17 → 2026-10-24 (+7d) | -82.6d → -89.6d |
| MOD-RWN-PL-773 | Test (Pressure-slope) UPVC for Rainwater Drainage Network Zone 2 |  | 2026-10-17 → 2026-10-24 (+7d) | -86.3d → -93.3d |
| MOD-RWN-PL-783 | Backfilling & Warning Tape UPVC for Rainwater Drainage Network Zone 2 |  | 2026-10-18 → 2026-10-25 (+7d) | -83.84d → -90.84d |
| 4 | **uPVC Connection Pipes (150mm dia)** |  | 2026-10-21 → 2026-10-28 (+7d) |  |
| MOD-RWN-PL-853 | Lean Concrete / bedding material UPVC Con. for Rainwater Drainage Network Zone 2 |  | 2026-10-17 → 2026-10-24 (+7d) | -86.26d → -93.26d |
| MOD-RWN-PL-863 | Lay & connect UPVC Con. for Rainwater Drainage Network Zone 2 |  | 2026-10-17 → 2026-10-24 (+7d) | -86.3d → -93.3d |
| MOD-RWN-PL-873 | Test (Pressure-slope) UPVC Con. for Rainwater Drainage Network Zone 2 |  | 2026-10-17 → 2026-10-24 (+7d) | -86.3d → -93.3d |
| MOD-RWN-PL-883 | Backfilling & compaction UPVC Con. for Rainwater Drainage Network Zone 2 |  | 2026-10-21 → 2026-10-28 (+7d) | -86.3d → -93.3d |
| MOD-RWN-PL-903 | Coating / Wrapping UPVC Con. for Rainwater Drainage Network Zone 2 |  | 2026-10-21 → 2026-10-28 (+7d) | -86.3d → -93.3d |
| 5 | **Precast Concrete Box Culverts** |  | 2026-11-23 → 2026-11-30 (+7d) |  |
| 1 | **Box Culverts (500x500mm to 3500x800mm)** |  | 2026-11-23 → 2026-11-30 (+7d) |  |
| MOD-RWN-PC-34 | Excavation to required depth Box culvert for Rainwater Drainage Network Zone 2 |  | 2026-10-18 → 2026-10-25 (+7d) | -102.31d → -108.31d |
| MOD-RWN-PC-44 | Dewatering and trench shoring Box culvert for Rainwater Drainage Network Zone 2 |  | 2026-10-20 → 2026-10-27 (+7d) | -102.31d → -108.31d |
| MOD-RWN-PC-54 | Bedding preparation (gravel/lean concrete) Box culvert for Rainwater Drainage Network Zone 2 |  | 2026-10-24 → 2026-10-31 (+7d) | -102.31d → -108.31d |
| MOD-RWN-PC-64 | Installation of box culvert units Box culvert for Rainwater Drainage Network Zone 2 | 2026-10-24 → 2026-10-31 (+7d) | 2026-10-29 → 2026-11-05 (+7d) | -102.31d → -108.31d |
| MOD-RWN-PC-74 | Alignment and joint sealing Box culvert for Rainwater Drainage Network Zone 2 | 2026-10-29 → 2026-11-05 (+7d) | 2026-11-03 → 2026-11-10 (+7d) | -101.61d → -107.61d |
| MOD-RWN-PC-84 | Construct headwalls/wing walls (if needed) Box culvert for Rainwater Drainage Network Zone 2 | 2026-11-03 → 2026-11-10 (+7d) | 2026-11-11 → 2026-11-18 (+7d) | -101.61d → -107.61d |
| MOD-RWN-PC-94 | Backfilling and compaction Box culvert for Rainwater Drainage Network Zone 2 | 2026-11-11 → 2026-11-18 (+7d) | 2026-11-18 → 2026-11-25 (+7d) | -101.61d → -107.61d |
| MOD-RWN-PC-104 | Surface finishing Box culvert for Rainwater Drainage Network Zone 2 | 2026-11-19 → 2026-11-26 (+7d) | 2026-11-23 → 2026-11-30 (+7d) | -101.61d → -107.61d |
| 2 | **Tube Culverts at Road Intersections** |  | 2026-10-24 → 2026-10-31 (+7d) |  |
| MOD-RWN-PC-124 | Trench excavation under road Tube culvert for Rainwater Drainage Network Zone 2 |  | 2026-10-24 → 2026-10-31 (+7d) | -75.51d → -81.51d |
| 3 | **Box Culverts at Road Intersections** |  | 2026-11-17 → 2026-11-24 (+7d) |  |
| MOD-RWN-PC-184 | Place bedding material for Rainwater Drainage Network Zone 2 |  | 2026-10-18 → 2026-10-25 (+7d) | -96.96d → -102.96d |
| MOD-RWN-PC-194 | Install precast box culvert for Rainwater Drainage Network Zone 2 | 2026-10-19 → 2026-10-26 (+7d) | 2026-10-22 → 2026-10-29 (+7d) | -96.96d → -102.96d |
| MOD-RWN-PC-204 | Construct connection chambers (if needed) for Rainwater Drainage Network Zone 2 | 2026-10-24 → 2026-10-31 (+7d) | 2026-10-24 → 2026-10-31 (+7d) | -96.96d → -102.96d |
| MOD-RWN-PC-214 | Joint treatment and testing for Rainwater Drainage Network Zone 2 | 2026-10-25 → 2026-11-01 (+7d) | 2026-11-07 → 2026-11-14 (+7d) | -96.96d → -102.96d |
| MOD-RWN-PC-224 | Backfilling and surface reinstatement for Rainwater Drainage Network Zone 2 | 2026-11-08 → 2026-11-15 (+7d) | 2026-11-17 → 2026-11-24 (+7d) | -96.96d → -102.96d |
| 4 | **Manholes** |  | 2026-11-24 → 2026-12-01 (+7d) |  |
| 1 | **Circular GRP Manholes (1200–1800mm dia)** |  | 2026-11-05 → 2026-11-12 (+7d) |  |
| MOD-RWN-MH-34 | Dewatering and safety barriers Circular Manhole for Rainwater Drainage Network Zone 2 |  | 2026-10-25 → 2026-11-01 (+7d) | -86.66d → -92.66d |
| MOD-RWN-MH-44 | Concrete base construction Circular Manhole for Rainwater Drainage Network Zone 2 |  | 2026-10-26 → 2026-11-02 (+7d) | -86.66d → -92.66d |
| MOD-RWN-MH-54 | Install GRP manhole shaft sections Circular Manhole for Rainwater Drainage Network Zone 2 |  | 2026-10-28 → 2026-11-04 (+7d) | -86.66d → -92.66d |
| MOD-RWN-MH-64 | Place slab and cover frame Circular Manhole for Rainwater Drainage Network Zone 2 |  | 2026-10-31 → 2026-11-07 (+7d) | -86.66d → -92.66d |
| MOD-RWN-MH-74 | Waterproofing Circular Manhole for Rainwater Drainage Network Zone 2 | 2026-10-31 → 2026-11-07 (+7d) | 2026-11-02 → 2026-11-09 (+7d) | -86.66d → -92.66d |
| MOD-RWN-MH-84 | Backfilling and compaction Circular Manhole for Rainwater Drainage Network Zone 2 | 2026-11-03 → 2026-11-10 (+7d) | 2026-11-05 → 2026-11-12 (+7d) | -86.66d → -92.66d |
| 3 | **Concrete Manholes for 1500x1500 Box Pipes** |  | 2026-11-08 → 2026-11-15 (+7d) |  |
| MOD-RWN-MH-174 | Base slab and wall shuttering Concrete Manhole 1.5x1.5 for Rainwater Drainage Network Zone 2 |  | 2026-10-25 → 2026-11-01 (+7d) | -88.66d → -94.66d |
| MOD-RWN-MH-184 | Wall reinforcement and casting Concrete Manhole 1.5x1.5 for Rainwater Drainage Network Zone 2 |  | 2026-10-28 → 2026-11-04 (+7d) | -88.66d → -94.66d |
| MOD-RWN-MH-194 | Roof slab with openings Concrete Manhole 1.5x1.5 for Rainwater Drainage Network Zone 2 |  | 2026-10-31 → 2026-11-07 (+7d) | -88.66d → -94.66d |
| MOD-RWN-MH-204 | Masonry/benching works inside Concrete Manhole 1.5x1.5 for Rainwater Drainage Network Zone 2 | 2026-10-31 → 2026-11-07 (+7d) | 2026-11-02 → 2026-11-09 (+7d) | -88.66d → -94.66d |
| MOD-RWN-MH-214 | Install cover and frame Concrete Manhole 1.5x1.5 for Rainwater Drainage Network Zone 2 | 2026-11-02 → 2026-11-09 (+7d) | 2026-11-04 → 2026-11-11 (+7d) | -88.66d → -94.66d |
| MOD-RWN-MH-224 | Backfill in layers Concrete Manhole 1.5x1.5 for Rainwater Drainage Network Zone 2 | 2026-11-04 → 2026-11-11 (+7d) | 2026-11-08 → 2026-11-15 (+7d) | -88.66d → -94.66d |
| 2 | **Concrete Manholes for 1000x1000 Box Pipes** |  | 2026-11-24 → 2026-12-01 (+7d) |  |
| MOD-RWN-MH-94 | Excavation Concrete Manhole 1x1 for Rainwater Drainage Network Zone 2 |  | 2026-10-26 → 2026-11-02 (+7d) | -102.31d → -108.31d |
| MOD-RWN-MH-104 | Base slab and wall shuttering Concrete Manhole 1x1 for Rainwater Drainage Network Zone 2 | 2026-10-26 → 2026-11-02 (+7d) | 2026-10-28 → 2026-11-04 (+7d) | -102.31d → -108.31d |
| MOD-RWN-MH-114 | Wall reinforcement and casting Concrete Manhole 1x1 for Rainwater Drainage Network Zone 2 | 2026-10-28 → 2026-11-04 (+7d) | 2026-11-03 → 2026-11-10 (+7d) | -102.31d → -108.31d |
| MOD-RWN-MH-124 | Roof slab with openings Concrete Manhole 1x1 for Rainwater Drainage Network Zone 2 | 2026-11-03 → 2026-11-10 (+7d) | 2026-11-10 → 2026-11-17 (+7d) | -102.31d → -108.31d |
| MOD-RWN-MH-134 | Masonry/benching works inside Concrete Manhole 1x1 for Rainwater Drainage Network Zone 2 | 2026-11-10 → 2026-11-17 (+7d) | 2026-11-16 → 2026-11-23 (+7d) | -102.31d → -108.31d |
| MOD-RWN-MH-144 | Install cover and frame Concrete Manhole 1x1 for Rainwater Drainage Network Zone 2 | 2026-11-16 → 2026-11-23 (+7d) | 2026-11-21 → 2026-11-28 (+7d) | -102.31d → -108.31d |
| MOD-RWN-MH-154 | Backfill in layers Concrete Manhole 1x1 for Rainwater Drainage Network Zone 2 | 2026-11-21 → 2026-11-28 (+7d) | 2026-11-24 → 2026-12-01 (+7d) | -102.31d → -108.31d |
| 3 | **Gully Outfalls to Swales** |  | 2026-11-08 → 2026-11-15 (+7d) |  |
| 1 | **Gully Outfalls to Swales** |  | 2026-10-28 → 2026-11-04 (+7d) |  |
| MOD-RWN-GO-21 | Excavate outfall channel Gully Outfall to Swales for Rainwater Drainage Network Zone 2 |  | 2026-10-24 → 2026-10-31 (+7d) | -79.61d → -85.61d |
| MOD-RWN-GO-31 | Place concrete apron or pipes Gully Outfall to Swales for Rainwater Drainage Network Zone 2 |  | 2026-10-25 → 2026-11-01 (+7d) | -79.61d → -85.61d |
| MOD-RWN-GO-41 | Provide slope protection (riprap) Gully Outfall to Swales for Rainwater Drainage Network Zone 2 |  | 2026-10-25 → 2026-11-01 (+7d) | -79.61d → -85.61d |
| MOD-RWN-GO-51 | Compact and shape terrain Gully Outfall to Swales for Rainwater Drainage Network Zone 2 | 2026-10-26 → 2026-11-02 (+7d) | 2026-10-28 → 2026-11-04 (+7d) | -79.61d → -85.61d |
| 2 | **Riprap Works & Protection** |  | 2026-11-08 → 2026-11-15 (+7d) |  |
| MOD-RWN-GO-61 | Lay filter fabric/membrane for Rainwater Drainage Network Zone 2 |  | 2026-10-25 → 2026-11-01 (+7d) | -88.41d → -94.41d |
| MOD-RWN-GO-71 | Place riprap/stone layer for Rainwater Drainage Network Zone 2 |  | 2026-10-29 → 2026-11-05 (+7d) | -88.41d → -94.41d |
| MOD-RWN-GO-81 | Compact edges for Rainwater Drainage Network Zone 2 | 2026-10-29 → 2026-11-05 (+7d) | 2026-11-04 → 2026-11-11 (+7d) | -88.41d → -94.41d |
| MOD-RWN-GO-91 | Ensure hydraulic flow direction for Rainwater Drainage Network Zone 2 | 2026-11-04 → 2026-11-11 (+7d) | 2026-11-08 → 2026-11-15 (+7d) | -88.41d → -94.41d |
| 6 | **Backfilling & Bedding** |  | 2026-10-26 → 2026-11-02 (+7d) |  |
| 2 | **Gravel Bedding & Filter Cloth for uPVC Drain Pipes** |  | 2026-10-26 → 2026-11-02 (+7d) |  |
| MOD-RWN-BB-102 | Final fill and trench restoration for Rainwater Drainage Network Zone 2 |  | 2026-10-26 → 2026-11-02 (+7d) | -77.75d → -83.75d |
| MOD-RWN-BB-62 | Line trench with filter cloth for Rainwater Drainage Network Zone 2 |  | 2026-10-19 → 2026-10-26 (+7d) | -77.75d → -83.75d |
| MOD-RWN-BB-72 | Place and compact gravel bedding for Rainwater Drainage Network Zone 2 |  | 2026-10-19 → 2026-10-26 (+7d) | -77.75d → -83.75d |

| ID | Task | Start | Finish | Total float |
| --- | --- | --- | --- | --- |
| MOD-RWN-BB-82 | Lay pipe within gravel zone for Rainwater Drainage Network Zone 2 |  | 2026-10-21 → 2026-10-28 (+7d) | -77.75d → -83.75d |
| MOD-RWN-BB-92 | Wrap filter cloth above pipe for Rainwater Drainage Network Zone 2 |  | 2026-10-24 → 2026-10-31 (+7d) | -77.75d → -83.75d |
| 1 | **Potable Water Network Zone 2** |  | 2026-12-02 → 2026-12-09 (+7d) |  |
| 1 | **Pipe Installation Works** |  | 2026-10-18 → 2026-10-25 (+7d) |  |
| MOD-PWN-PI-153 | Lean Concrete / Pipe Bedding Preparation for Potable Water Network Zone 2 |  | 2026-10-17 → 2026-10-24 (+7d) | 74d → 67d |
| MOD-PWN-PI-163 | HDPE Pipe Laying (200 mm to 710 mm) for Potable Water Network Zone 2 |  | 2026-10-17 → 2026-10-24 (+7d) | 74d → 67d |
| MOD-PWN-PI-173 | Test (Pressure-slope) for Potable Water Network Zone 2 |  | 2026-10-17 → 2026-10-24 (+7d) | 74d → 67d |
| MOD-PWN-PI-203 | Coating / Wrapping for Potable Water Network Zone 2 |  | 2026-10-18 → 2026-10-25 (+7d) | 74d → 67d |
| MOD-PWN-PI-213 | Backfilling & Warrning Tape for Potable Water Network Zone 2 |  | 2026-10-18 → 2026-10-25 (+7d) | 74d → 67d |
| 2 | **Valve Installation & Chambers** |  | 2026-10-28 → 2026-10-29 (+1d) |  |
| MOD-PWN-VC-37 | Valve Chamber Excavation for Potable Water Network Zone 2 |  | 2026-10-17 → 2026-10-24 (+7d) | 44.56d → 38.56d |
| MOD-PWN-VC-47 | RC Slab, Walls, or Precast Chambers for Potable Water Network Zone 2 |  | 2026-10-17 → 2026-10-24 (+7d) | 54.41d → 53.81d |
| MOD-PWN-VC-7 | Gate Valves (225–710 mm) for Potable Water Network Zone 2 |  | 2026-10-17 → 2026-10-24 (+7d) | 54.8d → 54.2d |
| MOD-PWN-VC-17 | Butterfly Valves (355, 500, 630 mm) for Potable Water Network Zone 2 |  | 2026-10-17 → 2026-10-24 (+7d) | 54.8d → 54.2d |
| MOD-PWN-VC-27 | 3-exit (2 x 2.5-inch and 1 x 4-inch) dry vacuum cylinder detachable fire nozzle for Potable Water Network Zone 2 |  | 2026-10-17 → 2026-10-24 (+7d) | 54.8d → 54.2d |
| MOD-PWN-VC-57 | Fixing Covers, Gratings, Frames for Potable Water Network Zone 2 |  | 2026-10-24 → 2026-10-25 (+1d) | 54.41d → 53.81d |
| MOD-PWN-VC-67 | Tagging & Painting for Potable Water Network Zone 2 | 2026-10-24 → 2026-10-25 (+1d) | 2026-10-28 → 2026-10-29 (+1d) | 54.41d → 53.81d |
| 3 | **Flow Meter Installation** |  | 2026-12-02 → 2026-12-09 (+7d) |  |
| MOD-PWN-FM-5 | Chamber Excavation (280 mm, 300 mm, 500 mm, 800 mm) for Potable Water Network Zone 2 |  | 2026-10-18 → 2026-10-25 (+7d) | 44.56d → 38.56d |
| MOD-PWN-FM-15 | RC or Precast Chamber Construction for Potable Water Network Zone 2 |  | 2026-10-20 → 2026-10-27 (+7d) | 44.56d → 38.56d |
| MOD-PWN-FM-25 | Flowmeter Installation & Pipe Integration for Potable Water Network Zone 2 |  | 2026-11-19 → 2026-11-26 (+7d) | 25.15d → 19.15d |
| MOD-PWN-FM-35 | Wiring/Cabling if applicable for Potable Water Network Zone 2 | 2026-11-19 → 2026-11-26 (+7d) | 2026-11-29 → 2026-12-06 (+7d) | 25.15d → 19.15d |
| MOD-PWN-FM-45 | Calibration & Commissioning for Potable Water Network Zone 2 | 2026-11-29 → 2026-12-06 (+7d) | 2026-12-02 → 2026-12-09 (+7d) | 25.15d → 19.15d |
| 4 | **Washout & Air Valve Chambers** |  | 2026-10-24 → 2026-10-31 (+7d) |  |
| MOD-PWN-WA-27 | Pipe Work for Potable Water Network Zone 2 |  | 2026-10-18 → 2026-10-25 (+7d) | 59d → 53d |
| MOD-PWN-WA-37 | Washout (Valve + Outlet) Installation for Potable Water Network Zone 2 |  | 2026-10-19 → 2026-10-26 (+7d) | 59d → 53d |
| MOD-PWN-WA-47 | Air Valve Rooms (Valve + Outlet) Installation for Potable Water Network Zone 2 |  | 2026-10-20 → 2026-10-27 (+7d) | 59d → 53d |
| MOD-PWN-WA-57 | Covers, Ladders & Tags for Potable Water Network Zone 2 |  | 2026-10-21 → 2026-10-28 (+7d) | 59d → 53d |
| MOD-PWN-WA-67 | Backfilling & Final Finishing for Potable Water Network Zone 2 | 2026-10-21 → 2026-10-28 (+7d) | 2026-10-24 → 2026-10-31 (+7d) | 59d → 53d |
| 2 | **Irrigation Network Zone 2** |  | 2026-11-19 → 2026-11-26 (+7d) |  |
| 1 | **Excavation, Pipe Laying & Backfilling** |  | 2026-10-19 → 2026-10-26 (+7d) |  |
| MOD-IRN-EB-340 | Lean Concrete / Pipe Bedding with Type B Material for Irrigation Network Zone 2 |  | 2026-10-17 → 2026-10-24 (+7d) | 73.2d → 66.2d |
| MOD-IRN-EB-350 | HDPE Pipe Laying (125 mm to 630 mm) for Irrigation Network Zone 2 |  | 2026-10-17 → 2026-10-24 (+7d) | 73.2d → 66.2d |
| MOD-IRN-EB-360 | Test (Pressure-slope) for Irrigation Network Zone 2 |  | 2026-10-18 → 2026-10-25 (+7d) | 73.2d → 66.2d |
| MOD-IRN-EB-370 | Coating / Wrapping for Irrigation Network Zone 2 |  | 2026-10-18 → 2026-10-25 (+7d) | 73.2d → 66.2d |
| MOD-IRN-EB-380 | Backfilling & Warrning Tape for Irrigation Network Zone 2 |  | 2026-10-19 → 2026-10-26 (+7d) | 73.2d → 66.2d |
| 2 | **Valves and Appurtenances** |  | 2026-10-19 → 2026-10-26 (+7d) |  |
| MOD-IRN-VA-5 | Supply & Installation of Valves (Gate Valve) for Irrigation Network Zone 2 |  | 2026-10-17 → 2026-10-24 (+7d) | 58.2d → 52.2d |
| MOD-IRN-VA-15 | Supply & Installation of Valves (Butterfly Valve) for Irrigation Network Zone 2 |  | 2026-10-17 → 2026-10-24 (+7d) | 58.2d → 52.2d |
| MOD-IRN-VA-25 | Installation of Flanges, Bolts, Collars, Nuts for Irrigation Network Zone 2 |  | 2026-10-18 → 2026-10-25 (+7d) | 58.2d → 52.2d |
| MOD-IRN-VA-35 | Valve Pressure Testing for Irrigation Network Zone 2 |  | 2026-10-19 → 2026-10-26 (+7d) | 62.4d → 56.4d |
| MOD-IRN-VA-45 | Support Brackets/Anchor Blocks for Irrigation Network Zone 2 |  | 2026-10-19 → 2026-10-26 (+7d) | 62.4d → 56.4d |
| 3 | **Valve Rooms** |  | 2026-10-18 → 2026-10-25 (+7d) |  |
| MOD-IRN-VR-67 | Backfilling and Finishing Valve Chamber for Irrigation Network Zone 2 |  | 2026-10-18 → 2026-10-25 (+7d) | 64d → 58d |
| 4 | **Washout Chambers** |  | 2026-10-18 → 2026-10-25 (+7d) |  |
| MOD-IRN-WC-46 | Manhole Frame, Cover & Ladder Fixing Washout Chamber for Irrigation Network Zone 2 |  | 2026-10-17 → 2026-10-24 (+7d) | 64.35d → 58.35d |
| MOD-IRN-WC-56 | Backfilling & Reinstatement Washout Chamber for Irrigation Network Zone 2 |  | 2026-10-18 → 2026-10-25 (+7d) | 64.35d → 58.35d |
| 6 | **Flow Meter Chambers** |  | 2026-11-19 → 2026-11-26 (+7d) |  |
| MOD-IRN-FC-16 | RCC Base & Wall Construction Flow Meter Chamber for Irrigation Network Zone 2 |  | 2026-10-18 → 2026-10-25 (+7d) | 58.2d → 52.2d |
| MOD-IRN-FC-26 | Flow Meter Installation (280, 300, 500 mm) Flow Meter Chamber for Irrigation Network Zone 2 |  | 2026-11-12 → 2026-11-19 (+7d) | 36.25d → 30.25d |
| MOD-IRN-FC-36 | Integration with Pipework Flow Meter Chamber for Irrigation Network Zone 2 |  | 2026-11-14 → 2026-11-21 (+7d) | 36.25d → 30.25d |
| MOD-IRN-FC-46 | Testing & Calibration Flow Meter Chamber for Irrigation Network Zone 2 |  | 2026-11-16 → 2026-11-23 (+7d) | 36.25d → 30.25d |
| MOD-IRN-FC-56 | Cover and Access Arrangement Flow Meter Chamber for Irrigation Network Zone 2 | 2026-11-16 → 2026-11-23 (+7d) | 2026-11-19 → 2026-11-26 (+7d) | 36.25d → 30.25d |
| 2 | **Backfilling Works** |  | 2027-01-21 → 2027-01-16 (-5d) |  |
| MOD-RCP-BW-15 | Place in layers not exceeding 300mm for Rainwater Collection Ponds Zone 2 |  | 2027-01-10 → 2027-01-07 (-3d) | 81d → 85.9d |
| MOD-RCP-BW-25 | Compact each layer to required density for Rainwater Collection Ponds Zone 2 |  | 2027-01-14 → 2027-01-10 (-4d) | 81d → 85.9d |
| MOD-RCP-BW-35 | Conduct field density tests for Rainwater Collection Ponds Zone 2 |  | 2027-01-16 → 2027-01-10 (-6d) | 81d → 85.9d |
| MOD-RCP-BW-45 | Final leveling and approval for Rainwater Collection Ponds Zone 2 | 2027-01-16 → 2027-01-10 (-6d) | 2027-01-21 → 2027-01-16 (-5d) | 81d → 85.9d |
| 1 | **Sewerage Network Zone 1** |  | 2027-03-28 → 2027-04-04 (+7d) |  |
| 1 | **Pipework: Supply, Installation, and Testing** |  | 2026-10-24 → 2026-10-31 (+7d) |  |
| 3 | **HDPE Pressure Pipes Installation (250mm–630mm)** |  | 2026-10-24 → 2026-10-31 (+7d) |  |
| MOD-SWN-PW-765 | Excavation and Trenching HDPE for Sewerage Network Zone 1 |  | 2026-10-17 → 2026-10-24 (+7d) | 101.1d → 94.1d |
| MOD-SWN-PW-645 | HDPE Pressure Pipes Installation (250mm–630mm) HDPE for Sewerage Network Zone 1 |  | 2026-10-19 → 2026-10-26 (+7d) | 101.1d → 94.1d |
| MOD-SWN-PW-795 | Coating / Wrapping HDPE for Sewerage Network Zone 1 |  | 2026-10-20 → 2026-10-27 (+7d) | 145.35d → 138.35d |
| MOD-SWN-PW-775 | Lean Concrete / Bedding HDPE for Sewerage Network Zone 1 |  | 2026-10-18 → 2026-10-25 (+7d) | 101.1d → 94.1d |
| MOD-SWN-PW-785 | Test (Pressure - Slope) HDPE for Sewerage Network Zone 1 |  | 2026-10-19 → 2026-10-26 (+7d) | 145.35d → 138.35d |
| MOD-SWN-PW-755 | Backfilling & Warrning Tape HDPE for Sewerage Network Zone 1 |  | 2026-10-24 → 2026-10-31 (+7d) | 145.35d → 138.35d |
| 2 | **Fittings and Valves** | 2026-10-19 → 2026-10-26 (+7d) | 2026-11-19 → 2026-11-26 (+7d) |  |
| MOD-SWN-FV-001 | Supply & Installation of HDPE Elbows for Sewerage Network Zone 1 | 2026-10-19 → 2026-10-26 (+7d) | 2026-10-26 → 2026-11-02 (+7d) | 87.1d → 81.1d |
| MOD-SWN-FV-002 | Gate Valves Installation for Sewerage Network Zone 1 | 2026-10-26 → 2026-11-02 (+7d) | 2026-10-31 → 2026-11-07 (+7d) | 87.1d → 81.1d |

| ID | Task | Start | Finish | Complete | Total float |
| --- | --- | --- | --- | --- | --- |
| MOD-SWN-FV-003 | Drain Valves Installation for Sewerage Network Zone 1 | 2026-10-31 → 2026-11-07 (+7d) | 2026-11-04 → 2026-11-11 (+7d) |  | 87.1d → 81.1d |
| MOD-SWN-FV-004 | Air Breather & Air Release Valves Installation for Sewerage Network Zone 1 | 2026-11-04 → 2026-11-11 (+7d) | 2026-11-16 → 2026-11-23 (+7d) |  | 87.1d → 81.1d |
| MOD-SWN-FV-005 | Jointing & Piping Accessories Installation for Sewerage Network Zone 1 | 2026-11-16 → 2026-11-23 (+7d) | 2026-11-19 → 2026-11-26 (+7d) |  | 87.1d → 81.1d |
| 3 | **Valve & Flow Meter Chambers** |  | 2026-12-31 → 2027-01-05 (+5d) |  |  |
| 1 | **Valve Chambers Construction** |  | 2026-12-13 → 2026-12-17 (+4d) |  |  |
| MOD-SWN-PW-1135 | Excavation Valve Chamber for Sewerage Network Zone 1 |  | 2026-10-27 → 2026-11-02 (+6d) | 50% → 55% | 76.7d → 72.1d |
| MOD-SWN-PW-1145 | Lean Concrete / Bedding Valve Chamber for Sewerage Network Zone 1 |  | 2026-11-09 → 2026-11-13 (+4d) | 40% → 45% | 76.7d → 72.1d |
| MOD-SWN-VF-164 | Valve Chambers Construction Valve Chamber for Sewerage Network Zone 1 |  | 2026-11-13 → 2026-11-17 (+4d) | 30% → 35% | 76.7d → 72.1d |
| MOD-SWN-PW-1155 | Test Valve Chamber for Sewerage Network Zone 1 | 2026-11-13 → 2026-11-17 (+4d) | 2026-11-28 → 2026-12-02 (+4d) |  | 95.4d → 90.8d |
| MOD-SWN-PW-1125 | Backfilling Valve Chamber for Sewerage Network Zone 1 | 2026-11-28 → 2026-12-02 (+4d) | 2026-12-13 → 2026-12-17 (+4d) |  | 95.4d → 90.8d |
| 2 | **Water Drain Chambers Construction** |  | 2026-12-11 → 2026-12-16 (+5d) |  |  |
| MOD-SWN-PW-1175 | Excavation Water Drain Chamber for Sewerage Network Zone 1 |  | 2026-10-23 → 2026-10-30 (+7d) |  | 89.3d → 82.3d |
| MOD-SWN-PW-1185 | Lean Concrete / Bedding Water Drain Chamber for Sewerage Network Zone 1 |  | 2026-10-31 → 2026-11-07 (+7d) |  | 89.3d → 82.3d |
| MOD-SWN-VF-174 | Water Drain Chambers Construction Water Drain Chamber for Sewerage Network Zone 1 |  | 2026-11-20 → 2026-11-25 (+5d) |  | 76.7d → 72.1d |
| MOD-SWN-PW-1195 | Test Water Drain Chamber for Sewerage Network Zone 1 |  | 2026-11-26 → 2026-12-01 (+5d) |  | 96.8d → 92.2d |
| MOD-SWN-PW-1165 | Backfilling Water Drain Chamber for Sewerage Network Zone 1 | 2026-11-26 → 2026-12-01 (+5d) | 2026-12-11 → 2026-12-16 (+5d) |  | 96.8d → 92.2d |
| 3 | **Discharge Chambers Construction** |  | 2026-12-29 → 2027-01-03 (+5d) |  |  |
| MOD-SWN-PW-1215 | Excavation Discharge Chamber for Sewerage Network Zone 1 |  | 2026-10-27 → 2026-11-03 (+7d) |  | 88.5d → 81.5d |
| MOD-SWN-PW-1225 | Lean Concrete / Bedding Discharge Chamber for Sewerage Network Zone 1 |  | 2026-11-09 → 2026-11-16 (+7d) |  | 88.5d → 81.5d |
| MOD-SWN-VF-184 | Discharge Chambers Construction Discharge Chamber for Sewerage Network Zone 1 |  | 2026-11-29 → 2026-12-04 (+5d) |  | 76.7d → 72.1d |
| MOD-SWN-PW-1235 | Test Discharge Chamber for Sewerage Network Zone 1 | 2026-11-30 → 2026-12-04 (+4d) | 2026-12-14 → 2026-12-19 (+5d) |  | 78.7d → 74.1d |
| MOD-SWN-PW-1205 | Backfilling Discharge Chamber for Sewerage Network Zone 1 | 2026-12-15 → 2026-12-19 (+4d) | 2026-12-29 → 2027-01-03 (+5d) |  | 78.7d → 74.1d |
| 4 | **Flow Meter Chambers Construction** |  | 2026-12-31 → 2027-01-05 (+5d) |  |  |
| MOD-SWN-PW-1255 | Excavation Flow Meter Chamber for Sewerage Network Zone 1 |  | 2026-10-24 → 2026-10-31 (+7d) |  | 104.53d → 97.53d |
| MOD-SWN-PW-1265 | Lean Concrete / Bedding Flow Meter Chamber for Sewerage Network Zone 1 |  | 2026-11-02 → 2026-11-09 (+7d) |  | 104.53d → 97.53d |
| MOD-SWN-VF-194 | Flow Meter Chambers Construction Flow Meter Chamber for Sewerage Network Zone 1 |  | 2026-12-01 → 2026-12-06 (+5d) |  | 76.7d → 72.1d |
| MOD-SWN-PW-1275 | Test Flow Meter Chamber for Sewerage Network Zone 1 | 2026-12-02 → 2026-12-06 (+4d) | 2026-12-16 → 2026-12-21 (+5d) |  | 76.7d → 72.1d |
| MOD-SWN-PW-1245 | Backfilling Flow Meter Chamber for Sewerage Network Zone 1 | 2026-12-17 → 2026-12-21 (+4d) | 2026-12-31 → 2027-01-05 (+5d) |  | 76.7d → 72.1d |
| 4 | **Manholes** |  | 2026-11-07 → 2026-11-14 (+7d) |  |  |
| 1 | **1200mm GRP Manholes with Backdrop** |  | 2026-11-07 → 2026-11-14 (+7d) |  |  |
| MOD-SWN-PW-1295 | Excavation 1.2m GRP for Sewerage Network Zone 1 |  | 2026-10-17 → 2026-10-24 (+7d) |  | 130.82d → 123.82d |
| MOD-SWN-PW-1305 | Lean Concrete / Bedding 1.2m GRP for Sewerage Network Zone 1 |  | 2026-10-17 → 2026-10-24 (+7d) |  | 130.82d → 123.82d |
| MOD-SWN-MH-105 | 1200mm GRP Manholes with Backdrop 1.2m GRP for Sewerage Network Zone 1 |  | 2026-10-18 → 2026-10-25 (+7d) |  | 130.82d → 123.82d |
| MOD-SWN-PW-1315 | Test 1.2m GRP for Sewerage Network Zone 1 | 2026-10-18 → 2026-10-25 (+7d) | 2026-10-23 → 2026-10-30 (+7d) |  | 130.82d → 123.82d |
| MOD-SWN-PW-1285 | Backfilling 1.2m GRP for Sewerage Network Zone 1 | 2026-10-23 → 2026-10-30 (+7d) | 2026-11-07 → 2026-11-14 (+7d) |  | 130.82d → 123.82d |
| 2 | **1500mm GRP Manholes (Standard & Backdrop)** |  | 2026-11-07 → 2026-11-14 (+7d) |  |  |
| MOD-SWN-PW-1335 | Excavation 1.5m GRP for Sewerage Network Zone 1 |  | 2026-10-17 → 2026-10-24 (+7d) |  | 130.82d → 123.82d |
| MOD-SWN-PW-1345 | Lean Concrete / Bedding 1.5m GRP for Sewerage Network Zone 1 |  | 2026-10-17 → 2026-10-24 (+7d) |  | 130.82d → 123.82d |
| MOD-SWN-MH-115 | 1500mm GRP Manholes (Standard & Backdrop) 1.5m GRP for Sewerage Network Zone 1 |  | 2026-10-18 → 2026-10-25 (+7d) |  | 130.82d → 123.82d |
| MOD-SWN-PW-1355 | Test 1.5m GRP for Sewerage Network Zone 1 | 2026-10-18 → 2026-10-25 (+7d) | 2026-10-23 → 2026-10-30 (+7d) |  | 130.82d → 123.82d |
| MOD-SWN-PW-1325 | Backfilling 1.5m GRP for Sewerage Network Zone 1 | 2026-10-23 → 2026-10-30 (+7d) | 2026-11-07 → 2026-11-14 (+7d) |  | 130.82d → 123.82d |
| 3 | **1800mm GRP Manholes (Standard & Backdrop)** |  | 2026-11-07 → 2026-11-14 (+7d) |  |  |
| MOD-SWN-PW-1375 | Excavation 1.8m GRP for Sewerage Network Zone 1 |  | 2026-10-17 → 2026-10-24 (+7d) |  | 130.82d → 123.82d |
| MOD-SWN-PW-1385 | Lean Concrete / Bedding 1.8m GRP for Sewerage Network Zone 1 |  | 2026-10-17 → 2026-10-24 (+7d) |  | 130.82d → 123.82d |
| MOD-SWN-MH-125 | 1800mm GRP Manholes (Standard & Backdrop) 1.8m GRP for Sewerage Network Zone 1 |  | 2026-10-18 → 2026-10-25 (+7d) |  | 130.82d → 123.82d |
| MOD-SWN-PW-1395 | Test 1.8m GRP for Sewerage Network Zone 1 | 2026-10-18 → 2026-10-25 (+7d) | 2026-10-23 → 2026-10-30 (+7d) |  | 131.02d → 124.02d |
| MOD-SWN-PW-1365 | Backfilling 1.8m GRP for Sewerage Network Zone 1 | 2026-10-23 → 2026-10-30 (+7d) | 2026-11-07 → 2026-11-14 (+7d) |  | 131.02d → 124.02d |
| 4 | **2000mm GRP Manholes (Standard & Backdrop)** |  | 2026-11-07 → 2026-11-14 (+7d) |  |  |
| MOD-SWN-PW-1415 | Excavation 2m GRP for Sewerage Network Zone 1 |  | 2026-10-17 → 2026-10-24 (+7d) |  | 130.82d → 123.82d |
| MOD-SWN-PW-1425 | Lean Concrete / Bedding 2m GRP for Sewerage Network Zone 1 |  | 2026-10-17 → 2026-10-24 (+7d) |  | 130.82d → 123.82d |
| MOD-SWN-MH-135 | 2000mm GRP Manholes (Standard & Backdrop) 2m GRP for Sewerage Network Zone 1 |  | 2026-10-18 → 2026-10-25 (+7d) |  | 130.82d → 123.82d |
| MOD-SWN-PW-1435 | Test 2m GRP for Sewerage Network Zone 1 | 2026-10-18 → 2026-10-25 (+7d) | 2026-10-23 → 2026-10-30 (+7d) |  | 130.82d → 123.82d |
| MOD-SWN-PW-1405 | Backfilling 2m GRP for Sewerage Network Zone 1 | 2026-10-23 → 2026-10-30 (+7d) | 2026-11-07 → 2026-11-14 (+7d) |  | 130.82d → 123.82d |
| 5 | **Pumping Stations** |  | 2027-03-28 → 2027-04-04 (+7d) |  |  |
| 9 | **Perimeter Walls & Gates** |  | 2026-10-21 → 2026-10-28 (+7d) |  |  |
| MOD-SWN-PS-049 | Main entrance gates – Each PS for Sewerage Network Zone 1 |  | 2026-10-21 → 2026-10-28 (+7d) |  | 14.6d → 8.6d |
| MOD-SWN-PS-050 | Personal entrance gate – Each PS for Sewerage Network Zone 1 |  | 2026-10-18 → 2026-10-25 (+7d) |  | 14.6d → 8.6d |
| 1 | **Sewage Pumps and MCC System** | 2026-11-12 → 2026-11-19 (+7d) | 2027-01-03 → 2027-01-10 (+7d) |  |  |
| MOD-SWN-PS-002 | Sewage pumps incl. MCC, control panel, flow meters, transducers, switches, GRP piping, testing & installation – PS1 for | 2026-11-12 → 2026-11-19 (+7d) | 2026-11-25 → 2026-12-02 (+7d) |  | 45.35d → 39.35d |
| MOD-SWN-PS-003 | Sewage pumps (2x86 l/s, 1x325 l/s) incl. MCC – PS1 for Sewerage Network Zone 1 | 2026-11-25 → 2026-12-02 (+7d) | 2026-12-09 → 2026-12-16 (+7d) |  | 45.35d → 39.35d |
| MOD-SWN-PS-004 | Sewage pumps (2x55 l/s) incl. MCC – PS2 for Sewerage Network Zone 1 | 2026-12-09 → 2026-12-16 (+7d) | 2027-01-03 → 2027-01-10 (+7d) |  | 45.35d → 39.35d |
| 2 | **Odor Control System** | 2026-12-14 → 2026-12-21 (+7d) | 2027-01-12 → 2027-01-19 (+7d) |  |  |
| MOD-SWN-PS-0081 | Odor control system – All stations (PS1) for Sewerage Network Zone 1 | 2026-12-14 → 2026-12-21 (+7d) | 2026-12-26 → 2027-01-02 (+7d) |  | -11.21d → -17.21d |
| MOD-SWN-PS-0082 | Odor control system – All stations (PS2) for Sewerage Network Zone 1 | 2026-12-26 → 2027-01-02 (+7d) | 2027-01-12 → 2027-01-19 (+7d) |  | 36.79d → 30.79d |
| 3 | **In-Line Booster Stations** | 2026-12-26 → 2027-01-02 (+7d) | 2027-03-28 → 2027-04-04 (+7d) |  |  |
| MOD-SWN-PS-010 | In-Line Booster Stations - Civil Works for Sewerage Network Zone 1 | 2026-12-26 → 2027-01-02 (+7d) | 2027-01-19 → 2027-01-26 (+7d) |  | -11.21d → -17.21d |
| MOD-SWN-PS-1164 | In-Line Booster Stations - Mechanical Works for Sewerage Network Zone 1 | 2027-01-19 → 2027-01-26 (+7d) | 2027-02-17 → 2027-03-02 (+13d) |  | -11.21d → -17.21d |
| MOD-SWN-PS-1174 | In-Line Booster Stations - Electrical Works for Sewerage Network Zone 1 | 2027-02-17 → 2027-03-02 (+13d) | 2027-03-28 → 2027-04-04 (+7d) |  | -11.21d → -17.21d |
| 7 | **Engine/Motor Control Center Buildings** | 2026-10-17 → 2026-10-24 (+7d) | 2026-10-25 → 2026-11-01 (+7d) |  |  |
| MOD-SWN-PS-038 | MCC Building – PS1 for Sewerage Network Zone 1 | 2026-10-17 → 2026-10-24 (+7d) | 2026-10-17 → 2026-10-24 (+7d) |  | 49.6d → 43.6d |

| ID | Task | Start | Finish | Total float |
| --- | --- | --- | --- | --- |
| MOD-SWN-PS-039 | MCC Building – PS2 for Sewerage Network Zone 1 | 2026-10-18 → 2026-10-25 (+7d) | 2026-10-25 → 2026-11-01 (+7d) | 73.6d → 67.6d |
| 4 | **Valves and Fittings (General Supply & Installation)** | 2026-11-12 → 2026-11-19 (+7d) | 2026-11-18 → 2026-11-25 (+7d) |  |
| MOD-SWN-PS-012 | Valves, fittings & accessories – PS1 for Sewerage Network Zone 1 | 2026-11-12 → 2026-11-19 (+7d) | 2026-11-15 → 2026-11-22 (+7d) | 84.35d → 78.35d |
| MOD-SWN-PS-013 | 35mm raked bar SS 316 mesh – PS1 for Sewerage Network Zone 1 | 2026-11-15 → 2026-11-22 (+7d) | 2026-11-16 → 2026-11-23 (+7d) | 84.35d → 78.35d |
| MOD-SWN-PS-014 | Valves, fittings, flow meters – PS2 for Sewerage Network Zone 1 | 2026-11-16 → 2026-11-23 (+7d) | 2026-11-18 → 2026-11-25 (+7d) | 84.35d → 78.35d |
| 5 | **Tank with Canopy** | 2027-01-19 → 2027-01-26 (+7d) | 2027-02-03 → 2027-02-14 (+11d) |  |
| MOD-SWN-PS-019 | Tank with canopy (per specs/drawings) - PS1 for Sewerage Network Zone 1 | 2027-01-19 → 2027-01-26 (+7d) | 2027-02-03 → 2027-02-14 (+11d) | 17.79d → 11.79d |
| 6 | **Pump Well and Valve Chambers** | 2026-10-18 → 2026-10-25 (+7d) | 2026-12-28 → 2027-01-04 (+7d) |  |
| MOD-SWN-PS-022 | Pump well & valve chamber structure – PS1 (2 wells, 12m deep) for Sewerage Network Zone 1 | 2026-10-18 → 2026-10-25 (+7d) | 2026-11-01 → 2026-11-08 (+7d) | 49.6d → 43.6d |
| MOD-SWN-PS-023 | Concrete wall (5x5x1m) inside PS1 well for Sewerage Network Zone 1 | 2026-11-02 → 2026-11-09 (+7d) | 2026-11-09 → 2026-11-16 (+7d) | 49.6d → 43.6d |
| MOD-SWN-PS-027 | Pump well & valve chamber structure – PS2 (2 wells, 3m each, 9m depth) for Sewerage Network Zone 1 | 2026-11-02 → 2026-11-09 (+7d) | 2026-11-17 → 2026-11-24 (+7d) | 53.6d → 47.6d |
| MOD-SWN-PS-024 | 35 mm raked bar SS 316 network chamber PS1 for Sewerage Network Zone 1 | 2026-11-10 → 2026-11-17 (+7d) | 2026-11-10 → 2026-11-17 (+7d) | 49.6d → 43.6d |
| MOD-SWN-PS-025 | Valve chamber – PS1 for Sewerage Network Zone 1 | 2026-11-11 → 2026-11-18 (+7d) | 2026-11-17 → 2026-11-24 (+7d) | 49.6d → 43.6d |
| MOD-SWN-PS-026 | Flow meter chamber – PS1 for Sewerage Network Zone 1 | 2026-11-18 → 2026-11-25 (+7d) | 2026-11-22 → 2026-11-29 (+7d) | 49.6d → 43.6d |
| MOD-SWN-PS-028 | Valve chamber – PS2 for Sewerage Network Zone 1 | 2026-11-23 → 2026-11-30 (+7d) | 2026-12-10 → 2026-12-17 (+7d) | 49.6d → 43.6d |
| MOD-SWN-PS-029 | Flow meter chamber – PS2 for Sewerage Network Zone 1 | 2026-12-12 → 2026-12-19 (+7d) | 2026-12-28 → 2027-01-04 (+7d) | 49.6d → 43.6d |
| 8 | **Odor Control System Base/Plinth** | 2026-11-08 → 2026-11-15 (+7d) | 2026-11-14 → 2026-11-21 (+7d) |  |
| MOD-SWN-PS-043 | Concrete plinth below odor control – All PSs for Sewerage Network Zone 1 | 2026-11-08 → 2026-11-15 (+7d) | 2026-11-14 → 2026-11-21 (+7d) | 14.6d → 8.6d |
| 10 | **Lighting Works** |  | 2026-11-12 → 2026-11-19 (+7d) |  |
| MOD-SWN-PS-052 | 250W Flood Light installation – Each PS for Sewerage Network Zone 1 |  | 2026-11-12 → 2026-11-19 (+7d) | 89d → 83d |
| 11 | **Duct Works** | 2026-11-02 → 2026-11-09 (+7d) | 2026-11-09 → 2026-11-16 (+7d) |  |
| MOD-SWN-PS-054 | uPVC duct Track 1 – All PSs for Sewerage Network Zone 1 | 2026-11-02 → 2026-11-09 (+7d) | 2026-11-02 → 2026-11-09 (+7d) | 88.6d → 82.6d |
| MOD-SWN-PS-055 | uPVC duct Track 2 – All PSs for Sewerage Network Zone 1 | 2026-11-03 → 2026-11-10 (+7d) | 2026-11-04 → 2026-11-11 (+7d) | 88.6d → 82.6d |
| MOD-SWN-PS-056 | uPVC duct Track 8 – All PSs for Sewerage Network Zone 1 | 2026-11-05 → 2026-11-12 (+7d) | 2026-11-09 → 2026-11-16 (+7d) | 88.6d → 82.6d |
| 12 | **Grounding Works** | 2026-11-10 → 2026-11-17 (+7d) | 2026-11-12 → 2026-11-19 (+7d) |  |
| MOD-SWN-PS-058 | Grounding pit – Each PS for Sewerage Network Zone 1 | 2026-11-10 → 2026-11-17 (+7d) | 2026-11-10 → 2026-11-17 (+7d) | 88.6d → 82.6d |
| MOD-SWN-PS-059 | 600x600 Cable pull pit – All PSs for Sewerage Network Zone 1 | 2026-11-11 → 2026-11-18 (+7d) | 2026-11-12 → 2026-11-19 (+7d) | 88.6d → 82.6d |
| 13 | **Landscaping / Interlocking Tiles** | 2026-10-19 → 2026-10-26 (+7d) | 2026-11-11 → 2026-11-18 (+7d) |  |
| MOD-SWN-PS-061 | Building perimeter interlock tiles for Sewerage Network Zone 1 | 2026-10-19 → 2026-10-26 (+7d) | 2026-11-07 → 2026-11-14 (+7d) | 14.6d → 8.6d |
| MOD-SWN-PS-062 | Entrance road paving tiles for Sewerage Network Zone 1 | 2026-11-08 → 2026-11-15 (+7d) | 2026-11-11 → 2026-11-18 (+7d) | 89.6d → 83.6d |
| 14 | **Pumping Station Internal Drainage Network** | 2026-10-17 → 2026-10-24 (+7d) | 2026-10-24 → 2026-10-31 (+7d) |  |
| MOD-SWN-PS-064 | Internal surface drainage channels for Sewerage Network Zone 1 | 2026-10-17 → 2026-10-24 (+7d) | 2026-10-24 → 2026-10-31 (+7d) | 105.6d → 99.6d |
| 12 | **Rainwater Drainage Network Zone 1** |  | 2026-11-16 → 2026-11-23 (+7d) |  |
| 1 | **Pipe Laying Works** |  | 2026-10-25 → 2026-11-01 (+7d) |  |
| 2 | **Supply & Installation of uPVC Pipes (250–300mm dia)** |  | 2026-10-20 → 2026-10-27 (+7d) |  |
| MOD-RWN-PL-913 | Excavation to required depth UPVC for Rainwater Drainage Network Zone 1 |  | 2026-10-18 → 2026-10-25 (+7d) | -90.25d → -97.25d |
| MOD-RWN-PL-923 | Lean Concrete / Bedding UPVC for Rainwater Drainage Network Zone 1 |  | 2026-10-18 → 2026-10-25 (+7d) | -90.25d → -97.25d |
| MOD-RWN-PL-933 | Laying of uPVC pipe UPVC for Rainwater Drainage Network Zone 1 |  | 2026-10-19 → 2026-10-26 (+7d) | -90.25d → -97.25d |
| MOD-RWN-PL-953 | Test (Pressure-slope) UPVC for Rainwater Drainage Network Zone 1 |  | 2026-10-19 → 2026-10-26 (+7d) | -90.25d → -97.25d |
| MOD-RWN-PL-943 | Coating / Wrapping UPVC for Rainwater Drainage Network Zone 1 |  | 2026-10-19 → 2026-10-26 (+7d) | -84.81d → -91.81d |
| MOD-RWN-PL-963 | Backfilling & Warning Tape UPVC for Rainwater Drainage Network Zone 1 |  | 2026-10-20 → 2026-10-27 (+7d) | -85.81d → -92.81d |
| 4 | **uPVC Connection Pipes (150mm dia)** |  | 2026-10-25 → 2026-11-01 (+7d) |  |
| MOD-RWN-PL-1043 | Lay & connect UPVC Con. for Rainwater Drainage Network Zone 1 |  | 2026-10-19 → 2026-10-26 (+7d) | -90.25d → -97.25d |
| MOD-RWN-PL-1053 | Test (Pressure-slope) UPVC Con. for Rainwater Drainage Network Zone 1 |  | 2026-10-20 → 2026-10-27 (+7d) | -90.25d → -97.25d |
| MOD-RWN-PL-1083 | Coating / Wrapping UPVC Con. for Rainwater Drainage Network Zone 1 |  | 2026-10-24 → 2026-10-31 (+7d) | -90.25d → -97.25d |
| MOD-RWN-PL-1063 | Backfilling & compaction UPVC Con. for Rainwater Drainage Network Zone 1 |  | 2026-10-25 → 2026-11-01 (+7d) | -90.25d → -97.25d |
| 5 | **Precast Concrete Box Culverts** |  | 2026-11-15 → 2026-11-22 (+7d) |  |
| 1 | **Box Culverts (500x500mm to 3500x800mm)** |  | 2026-11-10 → 2026-11-17 (+7d) |  |
| MOD-RWN-PC-003 | Excavation to required depth Box culvert for Rainwater Drainage Network Zone 1 |  | 2026-10-17 → 2026-10-24 (+7d) | -95.51d → -101.51d |
| MOD-RWN-PC-004 | Dewatering and trench shoring Box culvert for Rainwater Drainage Network Zone 1 |  | 2026-10-18 → 2026-10-25 (+7d) | -95.51d → -101.51d |
| MOD-RWN-PC-005 | Bedding preparation (gravel/lean concrete) Box culvert for Rainwater Drainage Network Zone 1 |  | 2026-10-19 → 2026-10-26 (+7d) | -95.51d → -101.51d |
| MOD-RWN-PC-006 | Installation of box culvert units Box culvert for Rainwater Drainage Network Zone 1 |  | 2026-10-24 → 2026-10-31 (+7d) | -95.51d → -101.51d |
| MOD-RWN-PC-007 | Alignment and joint sealing Box culvert for Rainwater Drainage Network Zone 1 |  | 2026-10-26 → 2026-11-02 (+7d) | -90.31d → -96.31d |
| MOD-RWN-PC-008 | Construct headwalls/wing walls (if needed) Box culvert for Rainwater Drainage Network Zone 1 | 2026-10-26 → 2026-11-02 (+7d) | 2026-11-01 → 2026-11-08 (+7d) | -90.31d → -96.31d |
| MOD-RWN-PC-009 | Backfilling and compaction Box culvert for Rainwater Drainage Network Zone 1 | 2026-11-01 → 2026-11-08 (+7d) | 2026-11-07 → 2026-11-14 (+7d) | -90.31d → -96.31d |
| MOD-RWN-PC-010 | Surface finishing Box culvert for Rainwater Drainage Network Zone 1 | 2026-11-07 → 2026-11-14 (+7d) | 2026-11-10 → 2026-11-17 (+7d) | -90.31d → -96.31d |
| 2 | **Tube Culverts at Road Intersections** |  | 2026-11-04 → 2026-11-11 (+7d) |  |
| MOD-RWN-PC-014 | Pipe bedding and twin pipe alignment Tube culvert for Rainwater Drainage Network Zone 1 |  | 2026-10-20 → 2026-10-27 (+7d) | -85.81d → -91.81d |
| MOD-RWN-PC-015 | Pipe laying and jointing Tube culvert for Rainwater Drainage Network Zone 1 |  | 2026-10-26 → 2026-11-02 (+7d) | -85.81d → -91.81d |
| MOD-RWN-PC-016 | Backfilling and road reinstatement Tube culvert for Rainwater Drainage Network Zone 1 | 2026-10-26 → 2026-11-02 (+7d) | 2026-11-04 → 2026-11-11 (+7d) | -85.81d → -91.81d |
| 3 | **Box Culverts at Road Intersections** |  | 2026-11-15 → 2026-11-22 (+7d) |  |
| MOD-RWN-PC-019 | Deep trench excavation with shoring for Rainwater Drainage Network Zone 1 |  | 2026-10-17 → 2026-10-24 (+7d) | -94.74d → -100.74d |
| MOD-RWN-PC-020 | Place bedding material for Rainwater Drainage Network Zone 1 |  | 2026-10-18 → 2026-10-25 (+7d) | -94.74d → -100.74d |
| MOD-RWN-PC-021 | Install precast box culvert for Rainwater Drainage Network Zone 1 | 2026-10-18 → 2026-10-25 (+7d) | 2026-10-22 → 2026-10-29 (+7d) | -94.74d → -100.74d |
| MOD-RWN-PC-022 | Construct connection chambers (if needed) for Rainwater Drainage Network Zone 1 | 2026-10-22 → 2026-10-29 (+7d) | 2026-10-24 → 2026-10-31 (+7d) | -94.74d → -100.74d |
| MOD-RWN-PC-023 | Joint treatment and testing for Rainwater Drainage Network Zone 1 | 2026-10-24 → 2026-10-31 (+7d) | 2026-11-04 → 2026-11-11 (+7d) | -94.74d → -100.74d |
| MOD-RWN-PC-024 | Backfilling and surface reinstatement for Rainwater Drainage Network Zone 1 | 2026-11-04 → 2026-11-11 (+7d) | 2026-11-15 → 2026-11-22 (+7d) | -94.74d → -100.74d |
| 4 | **Manholes** |  | 2026-11-16 → 2026-11-23 (+7d) |  |
| 1 | **Circular GRP Manholes (1200–1800mm dia)** |  | 2026-11-07 → 2026-11-14 (+7d) |  |
| MOD-RWN-MH-003 | Dewatering and safety barriers Circular Manhole for Rainwater Drainage Network Zone 1 |  | 2026-10-22 → 2026-10-29 (+7d) | -87.16d → -93.16d |

| ID | Task | Start | Finish | Total float |
| --- | --- | --- | --- | --- |
| MOD-RWN-MH-004 | Concrete base construction Circular Manhole for Rainwater Drainage Network Zone 1 |  | 2026-10-24 → 2026-10-31 (+7d) | -87.16d → -93.16d |
| MOD-RWN-MH-005 | Install GRP manhole shaft sections Circular Manhole for Rainwater Drainage Network Zone 1 |  | 2026-10-29 → 2026-11-05 (+7d) | -87.16d → -93.16d |
| MOD-RWN-MH-006 | Place slab and cover frame Circular Manhole for Rainwater Drainage Network Zone 1 |  | 2026-11-01 → 2026-11-08 (+7d) | -87.16d → -93.16d |
| MOD-RWN-MH-007 | Waterproofing Circular Manhole for Rainwater Drainage Network Zone 1 |  | 2026-11-04 → 2026-11-11 (+7d) | -87.16d → -93.16d |
| MOD-RWN-MH-008 | Backfilling and compaction Circular Manhole for Rainwater Drainage Network Zone 1 |  | 2026-11-07 → 2026-11-14 (+7d) | -87.16d → -93.16d |
| 3 | **Concrete Manholes for 1500x1500 Box Pipes** |  | 2026-11-09 → 2026-11-16 (+7d) |  |
| MOD-RWN-MH-019 | Base slab and wall shuttering Concrete Manhole 1.5x1.5 for Rainwater Drainage Network Zone 1 |  | 2026-10-22 → 2026-10-29 (+7d) | -89.86d → -95.86d |
| MOD-RWN-MH-020 | Wall reinforcement and casting Concrete Manhole 1.5x1.5 for Rainwater Drainage Network Zone 1 |  | 2026-10-25 → 2026-11-01 (+7d) | -89.86d → -95.86d |
| MOD-RWN-MH-021 | Roof slab with openings Concrete Manhole 1.5x1.5 for Rainwater Drainage Network Zone 1 |  | 2026-10-26 → 2026-11-02 (+7d) | -89.86d → -95.86d |
| MOD-RWN-MH-022 | Masonry/benching works inside Concrete Manhole 1.5x1.5 for Rainwater Drainage Network Zone 1 |  | 2026-10-28 → 2026-11-04 (+7d) | -89.86d → -95.86d |
| MOD-RWN-MH-023 | Install cover and frame Concrete Manhole 1.5x1.5 for Rainwater Drainage Network Zone 1 |  | 2026-11-03 → 2026-11-10 (+7d) | -89.86d → -95.86d |
| MOD-RWN-MH-024 | Backfill in layers Concrete Manhole 1.5x1.5 for Rainwater Drainage Network Zone 1 | 2026-11-03 → 2026-11-10 (+7d) | 2026-11-09 → 2026-11-16 (+7d) | -89.86d → -95.86d |
| 2 | **Concrete Manholes for 1000x1000 Box Pipes** |  | 2026-11-16 → 2026-11-23 (+7d) |  |
| MOD-RWN-MH-010 | Excavation Concrete Manhole 1x1 for Rainwater Drainage Network Zone 1 |  | 2026-10-22 → 2026-10-29 (+7d) | -95.51d → -101.51d |
| MOD-RWN-MH-011 | Base slab and wall shuttering Concrete Manhole 1x1 for Rainwater Drainage Network Zone 1 |  | 2026-10-24 → 2026-10-31 (+7d) | -95.51d → -101.51d |
| MOD-RWN-MH-012 | Wall reinforcement and casting Concrete Manhole 1x1 for Rainwater Drainage Network Zone 1 |  | 2026-10-27 → 2026-11-03 (+7d) | -95.51d → -101.51d |
| MOD-RWN-MH-013 | Roof slab with openings Concrete Manhole 1x1 for Rainwater Drainage Network Zone 1 |  | 2026-11-01 → 2026-11-08 (+7d) | -95.51d → -101.51d |
| MOD-RWN-MH-014 | Masonry/benching works inside Concrete Manhole 1x1 for Rainwater Drainage Network Zone 1 |  | 2026-11-08 → 2026-11-15 (+7d) | -95.51d → -101.51d |
| MOD-RWN-MH-015 | Install cover and frame Concrete Manhole 1x1 for Rainwater Drainage Network Zone 1 | 2026-11-08 → 2026-11-15 (+7d) | 2026-11-12 → 2026-11-19 (+7d) | -95.51d → -101.51d |
| MOD-RWN-MH-016 | Backfill in layers Concrete Manhole 1x1 for Rainwater Drainage Network Zone 1 | 2026-11-12 → 2026-11-19 (+7d) | 2026-11-16 → 2026-11-23 (+7d) | -95.51d → -101.51d |
| 2 | **Chambers and Catch Basins** |  | 2026-10-24 → 2026-10-31 (+7d) |  |
| 2 | **Rainwater Catch Basins** |  | 2026-10-24 → 2026-10-31 (+7d) |  |
| MOD-RWN-CC-012 | Backfill and surface finish Catch Basin for Rainwater Drainage Network Zone 1 |  | 2026-10-24 → 2026-10-31 (+7d) | -75.39d → -81.39d |
| 3 | **Gully Outfalls to Swales** |  | 2026-10-27 → 2026-11-03 (+7d) |  |
| 1 | **Gully Outfalls to Swales** |  | 2026-10-25 → 2026-11-01 (+7d) |  |
| MOD-RWN-GO-004 | Place concrete apron or pipes Gully Outfall to Swales for Rainwater Drainage Network Zone 1 |  | 2026-10-24 → 2026-10-31 (+7d) | -76.64d → -82.64d |
| MOD-RWN-GO-005 | Provide slope protection (riprap) Gully Outfall to Swales for Rainwater Drainage Network Zone 1 |  | 2026-10-24 → 2026-10-31 (+7d) | -76.64d → -82.64d |
| MOD-RWN-GO-006 | Compact and shape terrain Gully Outfall to Swales for Rainwater Drainage Network Zone 1 |  | 2026-10-25 → 2026-11-01 (+7d) | -76.64d → -82.64d |
| 2 | **Riprap Works & Protection** |  | 2026-10-27 → 2026-11-03 (+7d) |  |
| MOD-RWN-GO-008 | Lay filter fabric/membrane for Rainwater Drainage Network Zone 1 |  | 2026-10-24 → 2026-10-31 (+7d) | -79.03d → -85.03d |
| MOD-RWN-GO-009 | Place riprap/stone layer for Rainwater Drainage Network Zone 1 |  | 2026-10-26 → 2026-11-02 (+7d) | -79.03d → -85.03d |
| MOD-RWN-GO-010 | Compact edges for Rainwater Drainage Network Zone 1 |  | 2026-10-27 → 2026-11-03 (+7d) | -79.03d → -85.03d |
| 6 | **Backfilling & Bedding** |  | 2026-11-02 → 2026-11-09 (+7d) |  |
| 1 | **Backfilling Materials (Type A – 201–700mm Pipes)** |  | 2026-10-27 → 2026-11-03 (+7d) |  |
| MOD-RWN-BB-002 | Place granular bedding under pipe for Rainwater Drainage Network Zone 1 |  | 2026-10-17 → 2026-10-24 (+7d) | -89.71d → -95.71d |
| MOD-RWN-BB-003 | Lay and align pipe for Rainwater Drainage Network Zone 1 |  | 2026-10-18 → 2026-10-25 (+7d) | -78.45d → -84.45d |
| MOD-RWN-BB-004 | Backfill up to spring line for Rainwater Drainage Network Zone 1 |  | 2026-10-18 → 2026-10-25 (+7d) | -78.45d → -84.45d |
| MOD-RWN-BB-005 | Compact layer-wise for Rainwater Drainage Network Zone 1 |  | 2026-10-18 → 2026-10-25 (+7d) | -78.45d → -84.45d |
| MOD-RWN-BB-006 | Final fill to subgrade level for Rainwater Drainage Network Zone 1 | 2026-10-20 → 2026-10-27 (+7d) | 2026-10-27 → 2026-11-03 (+7d) | -78.45d → -84.45d |
| 2 | **Gravel Bedding & Filter Cloth for uPVC Drain Pipes** |  | 2026-11-02 → 2026-11-09 (+7d) |  |
| MOD-RWN-BB-008 | Line trench with filter cloth for Rainwater Drainage Network Zone 1 |  | 2026-10-17 → 2026-10-24 (+7d) | -84d → -90d |
| MOD-RWN-BB-009 | Place and compact gravel bedding for Rainwater Drainage Network Zone 1 |  | 2026-10-17 → 2026-10-24 (+7d) | -84d → -90d |
| MOD-RWN-BB-010 | Lay pipe within gravel zone for Rainwater Drainage Network Zone 1 |  | 2026-10-17 → 2026-10-24 (+7d) | -84d → -90d |
| MOD-RWN-BB-011 | Wrap filter cloth above pipe for Rainwater Drainage Network Zone 1 |  | 2026-10-19 → 2026-10-26 (+7d) | -84d → -90d |
| MOD-RWN-BB-012 | Final fill and trench restoration for Rainwater Drainage Network Zone 1 | 2026-10-19 → 2026-10-26 (+7d) | 2026-11-02 → 2026-11-09 (+7d) | -84d → -90d |
| 13 | **Potable Water Network Zone 1** |  | 2026-12-03 → 2026-12-10 (+7d) |  |
| 1 | **Pipe Installation Works** |  | 2026-10-18 → 2026-10-25 (+7d) |  |
| MOD-PWN-PI-383 | Lean Concrete / Pipe Bedding Preparation for Potable Water Network Zone 1 |  | 2026-10-17 → 2026-10-24 (+7d) | 73.63d → 66.63d |
| MOD-PWN-PI-393 | HDPE Pipe Laying (200 mm to 710 mm) for Potable Water Network Zone 1 |  | 2026-10-17 → 2026-10-24 (+7d) | 73.63d → 66.63d |
| MOD-PWN-PI-413 | Coating / Wrapping for Potable Water Network Zone 1 |  | 2026-10-18 → 2026-10-25 (+7d) | 73.63d → 66.63d |
| MOD-PWN-PI-403 | Test (Pressure-slope) for Potable Water Network Zone 1 |  | 2026-10-17 → 2026-10-24 (+7d) | 73.63d → 66.63d |
| MOD-PWN-PI-423 | Backfilling & Warrning Tape for Potable Water Network Zone 1 |  | 2026-10-18 → 2026-10-25 (+7d) | 73.63d → 66.63d |
| 2 | **Valve Installation & Chambers** |  | 2026-10-20 → 2026-10-26 (+6d) |  |
| MOD-PWN-VC-004 | Valve Chamber Excavation for Potable Water Network Zone 1 |  | 2026-10-17 → 2026-10-24 (+7d) | 43.7d → 37.7d |
| MOD-PWN-VC-005 | RC Slab, Walls, or Precast Chambers for Potable Water Network Zone 1 |  | 2026-10-17 → 2026-10-24 (+7d) | 62.17d → 56.57d |
| MOD-PWN-VC-001 | Gate Valves (225–710 mm) for Potable Water Network Zone 1 |  | 2026-10-17 → 2026-10-24 (+7d) | 62d → 56.4d |
| MOD-PWN-VC-003 | 3-exit (2 x 2.5-inch and 1 x 4-inch) dry vacuum cylinder detachable fire nozzle for Potable Water Network Zone 1 |  | 2026-10-17 → 2026-10-24 (+7d) | 62d → 56.4d |
| MOD-PWN-VC-002 | Butterfly Valves (355, 500, 630 mm) for Potable Water Network Zone 1 |  | 2026-10-17 → 2026-10-24 (+7d) | 62d → 56.4d |
| MOD-PWN-VC-006 | Fixing Covers, Gratings, Frames for Potable Water Network Zone 1 |  | 2026-10-18 → 2026-10-24 (+6d) | 62d → 56.4d |
| MOD-PWN-VC-007 | Tagging & Painting for Potable Water Network Zone 1 | 2026-10-18 → 2026-10-25 (+7d) | 2026-10-20 → 2026-10-26 (+6d) | 62d → 56.4d |
| 3 | **Flow Meter Installation** |  | 2026-12-03 → 2026-12-10 (+7d) |  |
| MOD-PWN-FM-002 | RC or Precast Chamber Construction for Potable Water Network Zone 1 |  | 2026-10-20 → 2026-10-27 (+7d) | 43.7d → 37.7d |
| MOD-PWN-FM-003 | Flowmeter Installation & Pipe Integration for Potable Water Network Zone 1 |  | 2026-11-21 → 2026-11-28 (+7d) | 23.65d → 17.65d |
| MOD-PWN-FM-004 | Wiring/Cabling if applicable for Potable Water Network Zone 1 | 2026-11-21 → 2026-11-28 (+7d) | 2026-11-30 → 2026-12-07 (+7d) | 23.65d → 17.65d |
| MOD-PWN-FM-005 | Calibration & Commissioning for Potable Water Network Zone 1 | 2026-11-30 → 2026-12-07 (+7d) | 2026-12-03 → 2026-12-10 (+7d) | 23.65d → 17.65d |
| 4 | **Washout & Air Valve Chambers** |  | 2026-10-25 → 2026-11-01 (+7d) |  |
| MOD-PWN-WA-003 | Pipe Work for Potable Water Network Zone 1 |  | 2026-10-18 → 2026-10-25 (+7d) | 57.4d → 51.4d |
| MOD-PWN-WA-004 | Washout (Valve + Outlet) Installation for Potable Water Network Zone 1 |  | 2026-10-19 → 2026-10-26 (+7d) | 57.4d → 51.4d |
| MOD-PWN-WA-005 | Air Valve Rooms (Valve + Outlet) Installation for Potable Water Network Zone 1 |  | 2026-10-21 → 2026-10-28 (+7d) | 57.4d → 51.4d |
| MOD-PWN-WA-006 | Covers, Ladders & Tags for Potable Water Network Zone 1 |  | 2026-10-21 → 2026-10-28 (+7d) | 57.4d → 51.4d |

| ID | Task | Start | Finish | Total float |
| --- | --- | --- | --- | --- |
| MOD-PWN-WA-007 | Backfilling & Final Finishing for Potable Water Network Zone 1 | 2026-10-22 → 2026-10-29 (+7d) | 2026-10-25 → 2026-11-01 (+7d) | 57.4d → 51.4d |
| 7 | **Irrigation Network Zone 1** |  | 2026-11-18 → 2026-11-25 (+7d) |  |
| 1 | **Excavation, Pipe Laying & Backfilling** |  | 2026-10-17 → 2026-10-24 (+7d) |  |
| MOD-IRN-EB-400 | Lean Concrete / Pipe Bedding with Type B Material for Irrigation Network Zone 1 |  | 2026-10-17 → 2026-10-24 (+7d) | 74.86d → 67.86d |
| MOD-IRN-EB-410 | HDPE Pipe Laying (125 mm to 630 mm) for Irrigation Network Zone 1 |  | 2026-10-17 → 2026-10-24 (+7d) | 74.86d → 67.86d |
| MOD-IRN-EB-420 | Test (Pressure-slope) for Irrigation Network Zone 1 |  | 2026-10-17 → 2026-10-24 (+7d) | 74.86d → 67.86d |
| MOD-IRN-EB-430 | Coating / Wrapping for Irrigation Network Zone 1 |  | 2026-10-17 → 2026-10-24 (+7d) | 74.86d → 67.86d |
| MOD-IRN-EB-440 | Backfilling & Warrning Tape for Irrigation Network Zone 1 |  | 2026-10-17 → 2026-10-24 (+7d) | 74.86d → 67.86d |
| 2 | **Valves and Appurtenances** |  | 2026-10-19 → 2026-10-26 (+7d) |  |
| MOD-IRN-VA-001 | Supply & Installation of Valves (Gate Valve) for Irrigation Network Zone 1 |  | 2026-10-17 → 2026-10-24 (+7d) | 59.55d → 53.55d |
| MOD-IRN-VA-002 | Supply & Installation of Valves (Butterfly Valve) for Irrigation Network Zone 1 |  | 2026-10-17 → 2026-10-24 (+7d) | 59.55d → 53.55d |
| MOD-IRN-VA-003 | Installation of Flanges, Bolts, Collars, Nuts for Irrigation Network Zone 1 |  | 2026-10-17 → 2026-10-24 (+7d) | 59.55d → 53.55d |
| MOD-IRN-VA-005 | Support Brackets/Anchor Blocks for Irrigation Network Zone 1 |  | 2026-10-19 → 2026-10-26 (+7d) | 63.14d → 57.14d |
| MOD-IRN-VA-004 | Valve Pressure Testing for Irrigation Network Zone 1 |  | 2026-10-18 → 2026-10-25 (+7d) | 63.14d → 57.14d |
| 3 | **Valve Rooms** |  | 2026-10-20 → 2026-10-26 (+6d) |  |
| MOD-IRN-VR-002 | Blinding Concrete Valve Chamber for Irrigation Network Zone 1 |  | 2026-10-17 → 2026-10-24 (+7d) | 61.68d → 56.56d |
| MOD-IRN-VR-003 | RCC Base Slab & Chamber Walls Valve Chamber for Irrigation Network Zone 1 |  | 2026-10-18 → 2026-10-25 (+7d) | 61.68d → 56.56d |
| MOD-IRN-VR-004 | Block Wall Construction (if any) Valve Chamber for Irrigation Network Zone 1 |  | 2026-10-18 → 2026-10-25 (+7d) | 61.68d → 56.56d |
| MOD-IRN-VR-005 | Installation of Valve inside the Room Valve Chamber for Irrigation Network Zone 1 |  | 2026-10-19 → 2026-10-26 (+7d) | 61.68d → 56.56d |
| MOD-IRN-VR-006 | Fixing Frame & Cover Valve Chamber for Irrigation Network Zone 1 |  | 2026-10-20 → 2026-10-26 (+6d) | 61.68d → 56.56d |
| MOD-IRN-VR-007 | Backfilling and Finishing Valve Chamber for Irrigation Network Zone 1 |  | 2026-10-20 → 2026-10-26 (+6d) | 61.68d → 56.56d |
| 4 | **Washout Chambers** |  | 2026-10-17 → 2026-10-24 (+7d) |  |
| MOD-IRN-WC-005 | Manhole Frame, Cover & Ladder Fixing Washout Chamber for Irrigation Network Zone 1 |  | 2026-10-17 → 2026-10-24 (+7d) | 64.77d → 58.77d |
| MOD-IRN-WC-006 | Backfilling & Reinstatement Washout Chamber for Irrigation Network Zone 1 |  | 2026-10-17 → 2026-10-24 (+7d) | 64.77d → 58.77d |
| 6 | **Flow Meter Chambers** |  | 2026-11-18 → 2026-11-25 (+7d) |  |
| MOD-IRN-FC-003 | Flow Meter Installation (280, 300, 500 mm) Flow Meter Chamber for Irrigation Network Zone 1 |  | 2026-11-15 → 2026-11-22 (+7d) | 36.75d → 30.75d |
| MOD-IRN-FC-004 | Integration with Pipework Flow Meter Chamber for Irrigation Network Zone 1 |  | 2026-11-15 → 2026-11-22 (+7d) | 36.75d → 30.75d |
| MOD-IRN-FC-005 | Testing & Calibration Flow Meter Chamber for Irrigation Network Zone 1 | 2026-11-15 → 2026-11-22 (+7d) | 2026-11-17 → 2026-11-24 (+7d) | 36.75d → 30.75d |
| MOD-IRN-FC-006 | Cover and Access Arrangement Flow Meter Chamber for Irrigation Network Zone 1 | 2026-11-17 → 2026-11-24 (+7d) | 2026-11-18 → 2026-11-25 (+7d) | 36.75d → 30.75d |
| 2 | **Backfilling Works** |  | 2027-01-28 → 2027-01-21 (-7d) |  |
| MOD-RCP-BW-002 | Place in layers not exceeding 300mm for Rainwater Collection Ponds Zone 1 |  | 2027-01-16 → 2027-01-13 (-3d) | 75.35d → 80.65d |
| MOD-RCP-BW-003 | Compact each layer to required density for Rainwater Collection Ponds Zone 1 |  | 2027-01-20 → 2027-01-16 (-4d) | 75.35d → 80.65d |
| MOD-RCP-BW-004 | Conduct field density tests for Rainwater Collection Ponds Zone 1 |  | 2027-01-23 → 2027-01-16 (-7d) | 75.35d → 80.65d |
| MOD-RCP-BW-005 | Final leveling and approval for Rainwater Collection Ponds Zone 1 | 2027-01-23 → 2027-01-16 (-7d) | 2027-01-28 → 2027-01-21 (-7d) | 75.35d → 80.65d |
| 1 | **Testing & Commissioning** |  | 2027-05-30 → 2027-06-06 (+7d) |  |
| 1 | **Zone 3** |  | 2027-05-30 → 2027-06-06 (+7d) |  |
| A103610 | Testing and Commissioning for Irrigation Network Zone 3 |  | 2026-12-19 → 2026-12-26 (+7d) | 68.23d → 62.23d |
| A103590 | Testing and Commissioning for Rain Water Drainage Network Zone 3 |  | 2026-12-14 → 2026-12-21 (+7d) | 72.58d → 66.58d |
| A103600 | Testing and Commissioning for Potable Water Network Zone 3 |  | 2026-11-30 → 2026-12-07 (+7d) | 84.03d → 78.03d |
| A102060 | Testing and Commissioning for Sewerage Network Zone 3 |  | 2026-12-31 → 2027-01-05 (+5d) | 57.18d → 53.58d |
| A103620 | Testing and Commissioning for Pumping Station Zone 3 | 2027-05-01 → 2027-05-08 (+7d) | 2027-05-30 → 2027-06-06 (+7d) | -51.35d → -57.35d |
| 2 | **Zone 2** |  | 2026-12-29 → 2027-01-04 (+6d) |  |
| A103660 | Testing and Commissioning for Potable Water Network Zone 2 |  | 2026-12-09 → 2026-12-16 (+7d) | 76.05d → 70.05d |
| A103670 | Testing and Commissioning for Irrigation Network Zone 2 |  | 2026-11-26 → 2026-12-03 (+7d) | 87.15d → 81.15d |
| A103640 | Testing and Commissioning for Sewerage Network Zone 2 |  | 2026-12-29 → 2027-01-04 (+6d) | 58.7d → 53.8d |
| A103650 | Testing and Commissioning for Rain Water Drainage Network Zone 2 |  | 2026-12-01 → 2026-12-08 (+7d) | 83.05d → 77.05d |
| 3 | **Zone 1** |  | 2027-04-08 → 2027-04-15 (+7d) |  |
| A103710 | Testing and Commissioning for Potable Water Network Zone 1 |  | 2026-12-08 → 2026-12-15 (+7d) | 76.65d → 70.65d |
| A103700 | Testing and Commissioning for Rain Water Drainage Network Zone 1 |  | 2026-11-23 → 2026-11-30 (+7d) | 90.48d → 84.48d |
| A103720 | Testing and Commissioning for Irrigation Network Zone 1 |  | 2026-11-25 → 2026-12-02 (+7d) | 87.65d → 81.65d |
| A103690 | Testing and Commissioning for Sewerage Network Zone 1 |  | 2027-01-09 → 2027-01-12 (+3d) | 50.3d → 46.7d |
| A103730 | Testing and Commissioning for Pumping Station Zone 1 | 2027-03-28 → 2027-04-04 (+7d) | 2027-04-08 → 2027-04-15 (+7d) | -11.21d → -17.21d |
| HO-0001 | Mechanical as-built Submittals & Approval | 2027-05-30 → 2027-06-06 (+7d) | 2027-06-23 → 2027-06-30 (+7d) | -51.35d → -57.35d |
| HO-3 | Electrical as-built Submittals & Approval | 2027-05-30 → 2027-06-06 (+7d) | 2027-06-23 → 2027-06-30 (+7d) | -30.35d → -36.35d |
| 3 | **Handover** | 2027-06-23 → 2027-06-30 (+7d) | 2027-07-18 → 2027-07-25 (+7d) |  |
| HO-0003 | Handover & Demobilization | 2027-06-23 → 2027-06-30 (+7d) | 2027-07-18 → 2027-07-25 (+7d) | -51.35d → -57.35d |

## Version 6 (data date 2026-10-31, saved 2026-11-02, file 38-MOD-2937-B4-Up- 110326.xer)

Last finish 2027-10-24 → 2027-10-27 (+3d). Complete tasks 481 → 488.

Changed:

| ID | Task | Start | Finish | Total float |
| --- | --- | --- | --- | --- |
| 1 | **Milestones** |  | 2027-10-24 → 2027-10-27 (+3d) |  |
| MIL-0003 | Submission of Report, Work Plan, and Schedule | 2026-10-24 → 2026-10-31 (+7d) | 2026-10-24 → 2026-10-31 (+7d) | 207d → 199.5d |
| MIL-0004 | Submission and Approval of Drawings and Specifications | 2026-10-29 → 2026-11-05 (+7d) | 2026-10-29 → 2026-11-05 (+7d) | -182d → -189d |
| MIL-0005 | Completion of Water Networks and Tanks | 2027-01-12 → 2027-01-20 (+8d) | 2027-01-12 → 2027-01-20 (+8d) | -12.5d → -20d |
| MIL-0008 | Final Handover | 2027-10-24 → 2027-10-27 (+3d) | 2027-10-24 → 2027-10-27 (+3d) | -158.57d → -161.88d |
| 2 | **Mobilization** |  | 2027-01-12 → 2027-01-20 (+8d) |  |
| 8 | **Deliverables** |  | 2027-01-12 → 2027-01-20 (+8d) |  |
| 1 | **Submittals** |  | 2026-12-31 → 2027-01-09 (+9d) |  |
| S10002 | Prepare & Submit Method of Statement |  | 2026-10-27 → 2026-11-04 (+8d) | 50.4d → 43.8d |
| S100015 | Prepare & Submit Pre-commissioning/ Commissioning Plan/ Startup/ Testing / Handover Plan | 2026-10-24 → 2026-10-31 (+7d) | 2026-12-31 → 2027-01-09 (+9d) | -10.6d → -17.2d |
| 2 | **Approvals** |  | 2027-01-12 → 2027-01-20 (+8d) |  |
| S100106 | Approval of Method of Statement |  | 2026-11-02 → 2026-11-10 (+8d) | 50.4d → 43.8d |
| S100086 | Approval of Pre-commissioning/ Commissioning Plan/ Startup/ Testing / Handover Plan | 2027-01-02 → 2027-01-09 (+7d) | 2027-01-12 → 2027-01-20 (+8d) | -10.6d → -17.2d |
| 7 | **Engineering** |  | 2026-11-04 → 2026-11-12 (+8d) |  |
| 3 | **Shop Drawing** |  | 2026-10-29 → 2026-11-05 (+7d) |  |
| 2 | **Approvals** |  | 2026-10-29 → 2026-11-05 (+7d) |  |
| A1630 | Landscape details approval |  | 2026-10-29 → 2026-11-05 (+7d) | -127d → -132d |
| 1 | **Material Submittal & Approval** |  | 2026-11-04 → 2026-11-12 (+8d) |  |
| 20 | **Long Lead Items** |  | 2026-10-28 → 2026-11-04 (+7d) |  |
| 13 | **Generators & Fuel Tanks - PS & Control Bldg backup power** |  | 2026-10-28 → 2026-11-04 (+7d) |  |
| A102930 | Material Submittal for Generators & Fuel Tanks - PS & Control Bldg backup power |  | 2026-10-27 → 2026-11-03 (+7d) | -14.21d → -19.21d |
| A102940 | Material Approval for Generators & Fuel Tanks - PS & Control Bldg backup power |  | 2026-10-28 → 2026-11-04 (+7d) | -14.21d → -19.21d |
| 21 | **Short Lead Items** |  | 2026-11-04 → 2026-11-12 (+8d) |  |
| 15 | **Interlock Tiles / Curbstone - Roads, Sidewalks, Landscape** |  | 2026-11-03 → 2026-11-11 (+8d) |  |
| A103180 | Material Approval for Interlock Tiles / Curbstone - Roads, Sidewalks, Landscape |  | 2026-11-03 → 2026-11-11 (+8d) | 14.73d → 10.6d |
| 16 | **Landscaping Materials (Soil, Plants) - Final works, softscape** |  | 2026-11-04 → 2026-11-12 (+8d) |  |
| A103200 | Material Approval for Landscaping Materials (Soil, Plants) - Final works, softscape |  | 2026-11-04 → 2026-11-12 (+8d) | -110.3d → -115.9d |
| 3 | **Procurement** |  | 2027-03-07 → 2027-03-20 (+13d) |  |
| 1 | **Prequalification** |  | 2026-10-28 → 2026-11-05 (+8d) |  |
| 21 | **Short Lead Items** |  | 2026-10-28 → 2026-11-05 (+8d) |  |
| 15 | **Interlock Tiles / Curbstone - Roads, Sidewalks, Landscape** |  | 2026-10-28 → 2026-11-05 (+8d) |  |
| A103560 | Prequalification Approval for Interlock Tiles / Curbstone - Roads, Sidewalks, Landscape |  | 2026-10-28 → 2026-11-05 (+8d) | 17.73d → 13.6d |
| 16 | **Landscaping Materials (Soil, Plants) - Final works, softscape** |  | 2026-10-28 → 2026-11-05 (+8d) |  |
| A103580 | Prequalification Approval for Landscaping Materials (Soil, Plants) - Final works, softscape |  | 2026-10-28 → 2026-11-05 (+8d) | -130.3d → -136.9d |
| 20 | **Long Lead Items** |  | 2026-12-21 → 2026-12-28 (+7d) |  |
| 2 | **Drainage Channel Covers (GRP / DI) - For storm and wastewater** |  | 2026-10-25 → 2026-11-01 (+7d) |  |
| A102570 | Custom Clearance for Drainage Channel Covers (GRP / DI) - For storm and wastewater |  | 2026-10-24 → 2026-11-01 (+8d) | -86.11d → -91.91d |
| A1230 | Manufacturing for Drainage Channel Covers (GRP / DI) - For storm and wastewater |  | 2026-10-24 → 2026-11-01 (+8d) | -86.11d → -91.91d |
| A1240 | Delivery for Drainage Channel Covers (GRP / DI) - For storm and wastewater |  | 2026-10-24 → 2026-11-01 (+8d) | -86.11d → -91.91d |
| A102580 | Staging Time for Drainage Channel Covers (GRP / DI) - For storm and wastewater |  | 2026-10-25 → 2026-11-01 (+7d) | -86.11d → -91.91d |
| 3 | **Control & Instrumentation Devices - Flow meters, pressure sensors** |  | 2026-11-19 → 2026-11-26 (+7d) |  |
| A1530 | Manufacturing for Control & Instrumentation Devices - Flow meters, pressure sensors |  | 2026-10-25 → 2026-11-02 (+8d) | -57.35d → -63.95d |
| A102610 | Custom Clearance for Control & Instrumentation Devices - Flow meters, pressure sensors |  | 2026-10-25 → 2026-11-02 (+8d) | -57.35d → -63.95d |
| A1570 | Delivery for Control & Instrumentation Devices - Flow meters, pressure sensors |  | 2026-10-27 → 2026-11-04 (+8d) | -57.35d → -63.95d |
| A102620 | Staging Time for Control & Instrumentation Devices - Flow meters, pressure sensors |  | 2026-11-19 → 2026-11-26 (+7d) | -57.35d → -63.95d |
| 10 | **Pumps (Sewage, Irrigation, Booster) - Especially for pumping stations** |  | 2026-10-28 → 2026-11-04 (+7d) |  |
| A102150 | Manufacturing for Pumps (Sewage, Irrigation, Booster) - Especially for pumping stations |  | 2026-10-24 → 2026-11-01 (+8d) | 27.3d → 20.7d |
| A102170 | Delivery for Pumps (Sewage, Irrigation, Booster) - Especially for pumping stations |  | 2026-10-26 → 2026-11-03 (+8d) | 27.3d → 20.7d |
| A102630 | Custom Clearance for Pumps (Sewage, Irrigation, Booster) - Especially for pumping stations |  | 2026-10-25 → 2026-11-01 (+7d) | 27.3d → 20.7d |
| A102640 | Staging Time for Pumps (Sewage, Irrigation, Booster) - Especially for pumping stations |  | 2026-10-28 → 2026-11-04 (+7d) | 27.3d → 20.7d |
| 13 | **Generators & Fuel Tanks - PS & Control Bldg backup power** |  | 2026-11-16 → 2026-11-23 (+7d) |  |
| A102230 | Manufacturing for Generators & Fuel Tanks - PS & Control Bldg backup power |  | 2026-11-01 → 2026-11-08 (+7d) | -17.21d → -23.21d |
| A102250 | Delivery for Generators & Fuel Tanks - PS & Control Bldg backup power |  | 2026-11-02 → 2026-11-09 (+7d) | -17.21d → -23.21d |
| A102670 | Custom Clearance for Generators & Fuel Tanks - PS & Control Bldg backup power |  | 2026-11-01 → 2026-11-08 (+7d) | -17.21d → -23.21d |
| A102680 | Staging Time for Generators & Fuel Tanks - PS & Control Bldg backup power |  | 2026-11-16 → 2026-11-23 (+7d) | -17.21d → -23.21d |
| 11 | **Odor Control Units - Sewer PS-specific** |  | 2026-12-21 → 2026-12-28 (+7d) |  |
| A102720 | Staging Time for Odor Control Units - Sewer PS-specific | 2026-11-16 → 2026-11-23 (+7d) | 2026-12-21 → 2026-12-28 (+7d) | -17.21d → -23.21d |
| 21 | **Short Lead Items** |  | 2027-03-07 → 2027-03-20 (+13d) |  |
| 1 | **Asphalt** |  | 2026-12-22 → 2026-12-29 (+7d) |  |
| A102730 | Delivery for Asphalt Phase 1 |  | 2026-12-22 → 2026-12-29 (+7d) | 39.58d → 33.58d |
| A103740 | Delivery for Asphalt Phase 2 |  | 2026-12-22 → 2026-12-29 (+7d) | 39.58d → 33.58d |
| A103750 | Delivery for Asphalt Phase 3 |  | 2026-12-22 → 2026-12-29 (+7d) | 83.66d → 77.66d |
| 15 | **Interlock Tiles / Curbstone - Roads, Sidewalks, Landscape** |  | 2026-11-23 → 2026-12-01 (+8d) |  |
| A102380 | Manufacturing for Interlock Tiles / Curbstone - Roads, Sidewalks, Landscape |  | 2026-11-03 → 2026-11-11 (+8d) | 17.73d → 12.6d |
| A102400 | Delivery for Interlock Tiles / Curbstone - Roads, Sidewalks, Landscape |  | 2026-11-04 → 2026-11-11 (+7d) | 17.73d → 12.6d |
| A102820 | Staging Time for Interlock Tiles / Curbstone - Roads, Sidewalks, Landscape |  | 2026-11-23 → 2026-12-01 (+8d) | 17.73d → 12.6d |
| 16 | **Landscaping Materials (Soil, Plants) - Final works, softscape** | 2026-11-04 → 2026-11-12 (+8d) | 2027-03-07 → 2027-03-20 (+13d) |  |
| A102350 | Issue PO for Landscaping Materials (Soil, Plants) - Final works, softscape | 2026-11-04 → 2026-11-12 (+8d) | 2026-11-09 → 2026-11-17 (+8d) | -131.3d → -137.9d |
| A102360 | Manufacturing for Landscaping Materials (Soil, Plants) - Final works, softscape | 2026-11-09 → 2026-11-17 (+8d) | 2027-01-18 → 2027-01-26 (+8d) | -131.3d → -137.9d |
| A102390 | Delivery for Landscaping Materials (Soil, Plants) - Final works, softscape | 2027-01-18 → 2027-01-26 (+8d) | 2027-03-07 → 2027-03-20 (+13d) | -131.3d → -137.9d |

| ID | Task | Start | Finish | Complete | Total float |
| --- | --- | --- | --- | --- | --- |
| 2 | **Sewerage Network Zone 3** |  | 2027-05-08 → 2027-05-19 (+11d) |  |  |
| 3 | **Pipework: Supply, Installation, and Testing** |  | 2026-11-16 → 2026-11-24 (+8d) |  |  |
| 3 | **HDPE Pressure Pipes Installation (250mm–630mm)** |  | 2026-11-16 → 2026-11-24 (+8d) |  |  |
| MOD-SWN-PW-425 | Test (Pressure - Slope) HDPE for Sewerage Network Zone 3 |  | 2026-10-26 → 2026-11-03 (+8d) |  | 126.38d → 118.78d |
| MOD-SWN-PW-435 | Coating / Wrapping HDPE for Sewerage Network Zone 3 |  | 2026-11-01 → 2026-11-09 (+8d) |  | 126.38d → 118.78d |
| MOD-SWN-PW-395 | Backfilling & Warrning Tape HDPE for Sewerage Network Zone 3 | 2026-11-02 → 2026-11-09 (+7d) | 2026-11-16 → 2026-11-24 (+8d) |  | 126.38d → 118.78d |
| 4 | **Fittings and Valves** | 2026-10-24 → 2026-10-31 (+7d) | 2026-11-23 → 2026-12-01 (+8d) |  |  |
| MOD-SWN-FV-55 | Supply & Installation of HDPE Elbows for Sewerage Network Zone 3 | 2026-10-24 → 2026-10-31 (+7d) | 2026-10-29 → 2026-11-07 (+9d) |  | 87.08d → 80.48d |
| MOD-SWN-FV-65 | Gate Valves Installation for Sewerage Network Zone 3 | 2026-10-31 → 2026-11-07 (+7d) | 2026-11-03 → 2026-11-11 (+8d) |  | 87.08d → 80.48d |
| MOD-SWN-FV-75 | Drain Valves Installation for Sewerage Network Zone 3 | 2026-11-04 → 2026-11-11 (+7d) | 2026-11-08 → 2026-11-16 (+8d) |  | 87.08d → 80.48d |
| MOD-SWN-FV-85 | Air Breather & Air Release Valves Installation for Sewerage Network Zone 3 | 2026-11-09 → 2026-11-16 (+7d) | 2026-11-19 → 2026-11-28 (+9d) |  | 87.08d → 80.48d |
| MOD-SWN-FV-95 | Jointing & Piping Accessories Installation for Sewerage Network Zone 3 | 2026-11-21 → 2026-11-28 (+7d) | 2026-11-23 → 2026-12-01 (+8d) |  | 87.08d → 80.48d |
| 6 | **Valve & Flow Meter Chambers** |  | 2027-01-02 → 2027-01-08 (+6d) |  |  |
| 1 | **Valve Chambers Construction** |  | 2026-12-04 → 2026-12-11 (+7d) |  |  |
| MOD-SWN-PW-815 | Excavation Valve Chamber for Sewerage Network Zone 3 |  | 2026-10-31 → 2026-11-07 (+7d) |  | 79.88d → 73.88d |
| MOD-SWN-PW-825 | Lean Concrete / Bedding Valve Chamber for Sewerage Network Zone 3 |  | 2026-11-09 → 2026-11-17 (+8d) |  | 79.88d → 73.88d |
| MOD-SWN-VF-84 | Valve Chambers Construction Valve Chamber for Sewerage Network Zone 3 |  | 2026-11-12 → 2026-11-20 (+8d) |  | 79.88d → 73.88d |
| MOD-SWN-PW-835 | Test Valve Chamber for Sewerage Network Zone 3 |  | 2026-11-19 → 2026-11-26 (+7d) |  | 109.13d → 101.53d |
| MOD-SWN-PW-805 | Backfilling Valve Chamber for Sewerage Network Zone 3 | 2026-11-19 → 2026-11-26 (+7d) | 2026-12-04 → 2026-12-11 (+7d) |  | 109.13d → 101.53d |
| 2 | **Water Drain Chambers Construction** |  | 2026-12-21 → 2026-12-28 (+7d) |  |  |
| MOD-SWN-PW-855 | Excavation Water Drain Chamber for Sewerage Network Zone 3 |  | 2026-10-30 → 2026-11-05 (+6d) | 70% → 75% | 84.68d → 80.78d |
| MOD-SWN-PW-865 | Lean Concrete / Bedding Water Drain Chamber for Sewerage Network Zone 3 |  | 2026-11-07 → 2026-11-13 (+6d) | 60% → 65% | 84.68d → 80.78d |
| MOD-SWN-VF-94 | Water Drain Chambers Construction Water Drain Chamber for Sewerage Network Zone 3 |  | 2026-11-21 → 2026-11-28 (+7d) | 50% → 55% | 79.88d → 73.88d |
| MOD-SWN-PW-875 | Test Water Drain Chamber for Sewerage Network Zone 3 | 2026-11-22 → 2026-11-28 (+6d) | 2026-12-06 → 2026-12-13 (+7d) |  | 91.38d → 84.73d |
| MOD-SWN-PW-845 | Backfilling Water Drain Chamber for Sewerage Network Zone 3 | 2026-12-07 → 2026-12-13 (+6d) | 2026-12-21 → 2026-12-28 (+7d) |  | 91.38d → 84.73d |
| 3 | **Discharge Chambers Construction** |  | 2026-12-28 → 2027-01-03 (+6d) |  |  |
| MOD-SWN-PW-895 | Excavation Discharge Chamber for Sewerage Network Zone 3 |  | 2026-11-01 → 2026-11-07 (+6d) | 60% → 65% | 89.98d → 86.18d |
| MOD-SWN-PW-905 | Lean Concrete / Bedding Discharge Chamber for Sewerage Network Zone 3 |  | 2026-11-11 → 2026-11-16 (+5d) | 50% → 60% | 89.98d → 86.18d |
| MOD-SWN-VF-104 | Discharge Chambers Construction Discharge Chamber for Sewerage Network Zone 3 |  | 2026-11-28 → 2026-12-04 (+6d) | 50% → 55% | 79.88d → 73.88d |
| MOD-SWN-PW-915 | Test Discharge Chamber for Sewerage Network Zone 3 | 2026-11-28 → 2026-12-04 (+6d) | 2026-12-13 → 2026-12-19 (+6d) |  | 84.88d → 78.88d |
| MOD-SWN-PW-885 | Backfilling Discharge Chamber for Sewerage Network Zone 3 | 2026-12-13 → 2026-12-19 (+6d) | 2026-12-28 → 2027-01-03 (+6d) |  | 84.88d → 78.88d |
| 4 | **Flow Meter Chambers Construction** |  | 2027-01-02 → 2027-01-08 (+6d) |  |  |
| MOD-SWN-PW-935 | Excavation Flow Meter Chamber for Sewerage Network Zone 3 |  | 2026-11-01 → 2026-11-08 (+7d) |  | 94.38d → 86.78d |
| MOD-SWN-PW-945 | Lean Concrete / Bedding Flow Meter Chamber for Sewerage Network Zone 3 |  | 2026-11-13 → 2026-11-21 (+8d) |  | 94.38d → 86.78d |
| MOD-SWN-VF-114 | Flow Meter Chambers Construction Flow Meter Chamber for Sewerage Network Zone 3 | 2026-11-28 → 2026-12-04 (+6d) | 2026-12-03 → 2026-12-09 (+6d) |  | 79.88d → 73.88d |
| MOD-SWN-PW-955 | Test Flow Meter Chamber for Sewerage Network Zone 3 | 2026-12-03 → 2026-12-09 (+6d) | 2026-12-18 → 2026-12-24 (+6d) |  | 79.88d → 73.88d |
| MOD-SWN-PW-925 | Backfilling Flow Meter Chamber for Sewerage Network Zone 3 | 2026-12-18 → 2026-12-24 (+6d) | 2027-01-02 → 2027-01-08 (+6d) |  | 79.88d → 73.88d |
| 7 | **Manholes** |  | 2026-12-14 → 2026-12-22 (+8d) |  |  |
| 2 | **1500mm GRP Manholes (Standard & Backdrop)** |  | 2026-12-04 → 2026-12-12 (+8d) |  |  |
| MOD-SWN-PW-1655 | Excavation 1.5m GRP for Sewerage Network Zone 3 |  | 2026-10-26 → 2026-11-02 (+7d) |  | 98.58d → 90.98d |
| MOD-SWN-PW-1665 | Lean Concrete / Bedding 1.5m GRP for Sewerage Network Zone 3 |  | 2026-10-31 → 2026-11-07 (+7d) |  | 98.58d → 90.98d |
| MOD-SWN-MH-195 | 1500mm GRP Manholes (Standard & Backdrop) 1.5m GRP for Sewerage Network Zone 3 |  | 2026-11-04 → 2026-11-12 (+8d) |  | 98.58d → 90.98d |
| MOD-SWN-PW-1675 | Test 1.5m GRP for Sewerage Network Zone 3 | 2026-11-04 → 2026-11-12 (+8d) | 2026-11-19 → 2026-11-27 (+8d) |  | 108.83d → 101.23d |
| MOD-SWN-PW-1645 | Backfilling 1.5m GRP for Sewerage Network Zone 3 | 2026-11-19 → 2026-11-27 (+8d) | 2026-12-04 → 2026-12-12 (+8d) |  | 108.83d → 101.23d |
| 3 | **1800mm GRP Manholes (Standard & Backdrop)** |  | 2026-12-08 → 2026-12-16 (+8d) |  |  |
| MOD-SWN-PW-1695 | Excavation 1.8m GRP for Sewerage Network Zone 3 |  | 2026-10-25 → 2026-11-02 (+8d) |  | 104.25d → 96.65d |
| MOD-SWN-PW-1705 | Lean Concrete / Bedding 1.8m GRP for Sewerage Network Zone 3 |  | 2026-10-29 → 2026-11-06 (+8d) |  | 104.25d → 96.65d |
| MOD-SWN-MH-205 | 1800mm GRP Manholes (Standard & Backdrop) 1.8m GRP for Sewerage Network Zone 3 |  | 2026-11-08 → 2026-11-16 (+8d) |  | 98.58d → 90.98d |
| MOD-SWN-PW-1715 | Test 1.8m GRP for Sewerage Network Zone 3 | 2026-11-08 → 2026-11-16 (+8d) | 2026-11-23 → 2026-12-01 (+8d) |  | 104.58d → 96.98d |
| MOD-SWN-PW-1685 | Backfilling 1.8m GRP for Sewerage Network Zone 3 | 2026-11-23 → 2026-12-01 (+8d) | 2026-12-08 → 2026-12-16 (+8d) |  | 104.58d → 96.98d |
| 4 | **2000mm GRP Manholes (Standard & Backdrop)** |  | 2026-12-14 → 2026-12-22 (+8d) |  |  |
| MOD-SWN-PW-1735 | Excavation 2m GRP for Sewerage Network Zone 3 |  | 2026-10-25 → 2026-11-02 (+8d) |  | 107.66d → 100.06d |
| MOD-SWN-PW-1745 | Lean Concrete / Bedding 2m GRP for Sewerage Network Zone 3 |  | 2026-10-30 → 2026-11-07 (+8d) |  | 107.66d → 100.06d |
| MOD-SWN-MH-215 | 2000mm GRP Manholes (Standard & Backdrop) 2m GRP for Sewerage Network Zone 3 | 2026-11-08 → 2026-11-16 (+8d) | 2026-11-14 → 2026-11-22 (+8d) |  | 98.58d → 90.98d |
| MOD-SWN-PW-1755 | Test 2m GRP for Sewerage Network Zone 3 | 2026-11-14 → 2026-11-22 (+8d) | 2026-11-29 → 2026-12-07 (+8d) |  | 98.58d → 90.98d |
| MOD-SWN-PW-1725 | Backfilling 2m GRP for Sewerage Network Zone 3 | 2026-11-29 → 2026-12-07 (+8d) | 2026-12-14 → 2026-12-22 (+8d) |  | 98.58d → 90.98d |
| 5 | **Pumping Stations** |  | 2027-05-08 → 2027-05-19 (+11d) |  |  |
| 1 | **Sewage Pumps and MCC System** | 2026-11-16 → 2026-11-23 (+7d) | 2027-01-04 → 2027-01-11 (+7d) |  |  |
| MOD-SWN-PS-644 | Sewage pumps (2x30 l/s, 1x115 l/s) incl. MCC – PS3 for Sewerage Network Zone 3 | 2026-11-16 → 2026-11-23 (+7d) | 2026-12-10 → 2026-12-17 (+7d) |  | 32.79d → 26.79d |
| MOD-SWN-PS-654 | Sewage pumps (2x100 l/s) incl. MCC – PS4 for Sewerage Network Zone 3 | 2026-12-10 → 2026-12-17 (+7d) | 2027-01-04 → 2027-01-11 (+7d) |  | 32.79d → 26.79d |
| 3 | **In-Line Booster Stations** | 2026-10-24 → 2026-10-31 (+7d) | 2027-01-04 → 2027-01-12 (+8d) |  |  |
| MOD-SWN-PS-674 | In-Line Booster Stations - Civil Works for Sewerage Network Zone 3 | 2026-10-24 → 2026-10-31 (+7d) | 2026-11-16 → 2026-11-24 (+8d) |  | 32.6d → 26d |
| MOD-SWN-PS-1144 | In-Line Booster Stations - Mechanical Works for Sewerage Network Zone 3 | 2026-11-17 → 2026-11-24 (+7d) | 2026-12-10 → 2026-12-19 (+9d) |  | 32.6d → 26d |
| MOD-SWN-PS-1154 | In-Line Booster Stations - Electrical Works for Sewerage Network Zone 3 | 2026-12-12 → 2026-12-19 (+7d) | 2027-01-04 → 2027-01-12 (+8d) |  | 32.6d → 26d |
| 7 | **Engine/Motor Control Center Buildings** | 2026-10-24 → 2026-10-31 (+7d) | 2026-11-01 → 2026-11-09 (+8d) |  |  |
| MOD-SWN-PS-934 | MCC Building – PS3 for Sewerage Network Zone 3 | 2026-10-24 → 2026-10-31 (+7d) | 2026-10-24 → 2026-11-01 (+8d) |  | -35.1d → -41.7d |
| MOD-SWN-PS-944 | MCC Building – PS4 for Sewerage Network Zone 3 | 2026-10-25 → 2026-11-01 (+7d) | 2026-11-01 → 2026-11-09 (+8d) |  | -2.7d → -9.3d |
| 4 | **Valves and Fittings (General Supply & Installation)** |  | 2026-11-26 → 2026-12-05 (+9d) |  |  |
| MOD-SWN-PS-714 | Valves, fittings, flow meters – PS3 for Sewerage Network Zone 3 |  | 2026-11-21 → 2026-11-29 (+8d) |  | -57.35d → -63.95d |
| MOD-SWN-PS-724 | Valves, fittings, flow meters – PS4 for Sewerage Network Zone 3 |  | 2026-11-24 → 2026-12-01 (+7d) |  | -57.35d → -63.95d |

| ID | Task | Start | Finish | Complete | Total float |
| --- | --- | --- | --- | --- | --- |
| MOD-SWN-PS-734 | 35mm SS 316 mesh network – PS4 for Sewerage Network Zone 3 |  | 2026-11-26 → 2026-12-05 (+9d) |  | -57.35d → -63.95d |
| 5 | **Tank with Canopy** | 2026-11-26 → 2026-12-05 (+9d) | 2026-12-10 → 2026-12-19 (+9d) |  |  |
| MOD-SWN-PS-754 | Tank with canopy (per specs/drawings) - PS4 for Sewerage Network Zone 3 | 2026-11-26 → 2026-12-05 (+9d) | 2026-12-10 → 2026-12-19 (+9d) |  | -57.35d → -63.95d |
| 6 | **Pump Well and Valve Chambers** | 2026-12-10 → 2026-12-19 (+9d) | 2027-03-29 → 2027-04-05 (+7d) |  |  |
| MOD-SWN-PS-844 | Pump well & valve chamber structure – PS3 (2 wells, 5x5m, 11m depth) for Sewerage Network Zone 3 | 2026-12-10 → 2026-12-19 (+9d) | 2027-01-04 → 2027-01-12 (+8d) |  | -57.35d → -63.95d |
| MOD-SWN-PS-854 | Concrete wall (5x5x1m) inside PS3 well for Sewerage Network Zone 3 | 2027-01-04 → 2027-01-12 (+8d) | 2027-01-09 → 2027-01-17 (+8d) |  | -0.05d → -6.65d |
| MOD-SWN-PS-884 | Pump well & valve chamber structure – PS4 (1 well, 4m, 11m depth) for Sewerage Network Zone 3 | 2027-01-04 → 2027-01-12 (+8d) | 2027-01-30 → 2027-02-07 (+8d) |  | -57.35d → -63.95d |
| MOD-SWN-PS-864 | Valve chamber – PS3 for Sewerage Network Zone 3 | 2027-01-09 → 2027-01-17 (+8d) | 2027-02-01 → 2027-02-10 (+9d) |  | -0.05d → -6.65d |
| MOD-SWN-PS-894 | Valve chamber – PS4 for Sewerage Network Zone 3 | 2027-01-30 → 2027-02-07 (+8d) | 2027-03-08 → 2027-03-21 (+13d) |  | -57.35d → -63.95d |
| MOD-SWN-PS-874 | Flow meter chamber – PS3 for Sewerage Network Zone 3 | 2027-02-01 → 2027-02-10 (+9d) | 2027-02-15 → 2027-03-01 (+14d) |  | -0.05d → -6.65d |
| MOD-SWN-PS-904 | Flow meter chamber – PS4 for Sewerage Network Zone 3 | 2027-03-08 → 2027-03-21 (+13d) | 2027-03-29 → 2027-04-05 (+7d) |  | -57.35d → -63.95d |
| 8 | **Odor Control System Base/Plinth** | 2027-04-29 → 2027-05-06 (+7d) | 2027-05-06 → 2027-05-18 (+12d) |  |  |
| MOD-SWN-PS-954 | Concrete plinth below odor control – PS3 & PS4 for Sewerage Network Zone 3 | 2027-04-29 → 2027-05-06 (+7d) | 2027-05-06 → 2027-05-18 (+12d) |  | -57.35d → -63.95d |
| 10 | **Lighting Works** |  | 2027-05-08 → 2027-05-19 (+11d) |  |  |
| MOD-SWN-PS-1024 | 250W Flood Light installation – PS3 & PS4 for Sewerage Network Zone 3 |  | 2027-05-08 → 2027-05-19 (+11d) |  | -57.35d → -63.95d |
| 11 | **Duct Works** | 2027-03-29 → 2027-04-05 (+7d) | 2027-04-06 → 2027-04-13 (+7d) |  |  |
| MOD-SWN-PS-1034 | uPVC duct Track 1 – PS3 & PS4 for Sewerage Network Zone 3 | 2027-03-29 → 2027-04-05 (+7d) | 2027-03-30 → 2027-04-06 (+7d) |  | -57.35d → -63.95d |
| MOD-SWN-PS-1044 | uPVC duct Track 2 – PS3 & PS4 for Sewerage Network Zone 3 | 2027-03-30 → 2027-04-06 (+7d) | 2027-04-01 → 2027-04-08 (+7d) |  | -57.35d → -63.95d |
| MOD-SWN-PS-1054 | uPVC duct Track 8 – PS3 & PS4 for Sewerage Network Zone 3 | 2027-04-01 → 2027-04-08 (+7d) | 2027-04-06 → 2027-04-13 (+7d) |  | -57.35d → -63.95d |
| 12 | **Grounding Works** | 2027-04-06 → 2027-04-13 (+7d) | 2027-04-10 → 2027-04-17 (+7d) |  |  |
| MOD-SWN-PS-1064 | Grounding pit – PS3 & PS4 for Sewerage Network Zone 3 | 2027-04-06 → 2027-04-13 (+7d) | 2027-04-07 → 2027-04-14 (+7d) |  | -57.35d → -63.95d |
| MOD-SWN-PS-1074 | 600x600 Cable pull pit – PS3 & PS4 for Sewerage Network Zone 3 | 2027-04-07 → 2027-04-14 (+7d) | 2027-04-10 → 2027-04-17 (+7d) |  | -57.35d → -63.95d |
| 13 | **Landscaping / Interlocking Tiles** | 2027-04-10 → 2027-04-17 (+7d) | 2027-05-04 → 2027-05-11 (+7d) |  |  |
| MOD-SWN-PS-1084 | Building perimeter interlock tiles for Sewerage Network Zone 3 | 2027-04-10 → 2027-04-17 (+7d) | 2027-04-29 → 2027-05-06 (+7d) |  | -57.35d → -63.95d |
| MOD-SWN-PS-1094 | Entrance road paving tiles for Sewerage Network Zone 3 | 2027-04-29 → 2027-05-06 (+7d) | 2027-05-04 → 2027-05-11 (+7d) |  | -54.05d → -60.65d |
| 14 | **Pumping Station Internal Drainage Network** | 2027-04-10 → 2027-04-17 (+7d) | 2027-04-18 → 2027-04-25 (+7d) |  |  |
| MOD-SWN-PS-1104 | Internal surface drainage channels for Sewerage Network Zone 3 | 2027-04-10 → 2027-04-17 (+7d) | 2027-04-18 → 2027-04-25 (+7d) |  | -40.05d → -46.65d |
| 14 | **Rainwater Drainage Network Zone 3** |  | 2026-12-17 → 2026-12-26 (+9d) |  |  |
| 1 | **Pipe Laying Works** |  | 2026-11-22 → 2026-11-29 (+7d) |  |  |
| 2 | **Supply & Installation of uPVC Pipes (250–300mm dia)** |  | 2026-10-30 → 2026-11-07 (+8d) |  |  |
| MOD-RWN-PL-233 | Excavation to required depth UPVC for Rainwater Drainage Network Zone 3 |  | 2026-10-25 → 2026-11-01 (+7d) |  | -118.11d → -125.71d |
| MOD-RWN-PL-243 | Lean Concrete / Bedding UPVC for Rainwater Drainage Network Zone 3 |  | 2026-10-25 → 2026-11-01 (+7d) |  | -118.11d → -125.71d |
| MOD-RWN-PL-253 | Laying of uPVC pipe UPVC for Rainwater Drainage Network Zone 3 |  | 2026-10-26 → 2026-11-02 (+7d) |  | -118.11d → -125.71d |
| MOD-RWN-PL-283 | Test (Pressure-slope) UPVC for Rainwater Drainage Network Zone 3 |  | 2026-10-26 → 2026-11-03 (+8d) |  | -118.11d → -125.71d |
| MOD-RWN-PL-263 | Coating / Wrapping UPVC for Rainwater Drainage Network Zone 3 |  | 2026-10-27 → 2026-11-03 (+7d) |  | -92.31d → -99.91d |
| MOD-RWN-PL-293 | Backfilling & Warning Tape UPVC for Rainwater Drainage Network Zone 3 |  | 2026-10-30 → 2026-11-07 (+8d) |  | -95.91d → -103.51d |
| 3 | **Supply & Installation of GRP Pipes (350–800mm dia)** |  | 2026-11-13 → 2026-11-06 (-7d) |  |  |
| MOD-RWN-PL-343 | Test (Pressure-slope) GRP for Rainwater Drainage Network Zone 3 |  | 2026-10-29 → 2026-11-06 (+8d) |  | -110.06d → -102.16d |
| MOD-RWN-PL-344 | Coating / Wrapping GRP for Rainwater Drainage Network Zone 3 |  | 2026-11-08 → 2026-10-28 A (-11d) | 50% → 100% | -110.06d → none |
| MOD-RWN-PL-353 | Backfilling & compaction GRP for Rainwater Drainage Network Zone 3 |  | 2026-11-13 → 2026-11-01 A (-12d) | 50% → 100% | -110.06d → none |
| 4 | **uPVC Connection Pipes (150mm dia)** |  | 2026-11-22 → 2026-11-29 (+7d) |  |  |
| MOD-RWN-PL-373 | Excavate short trench paths UPVC Con. for Rainwater Drainage Network Zone 3 |  | 2026-10-24 → 2026-10-31 (+7d) |  | -116.29d → -123.89d |
| MOD-RWN-PL-383 | Lean Concrete / bedding material UPVC Con. for Rainwater Drainage Network Zone 3 |  | 2026-10-24 → 2026-11-01 (+8d) |  | -116.29d → -123.89d |
| MOD-RWN-PL-393 | Lay & connect UPVC Con. for Rainwater Drainage Network Zone 3 |  | 2026-10-27 → 2026-11-03 (+7d) |  | -118.11d → -125.71d |
| MOD-RWN-PL-403 | Test (Pressure-slope) UPVC Con. for Rainwater Drainage Network Zone 3 | 2026-10-27 → 2026-11-03 (+7d) | 2026-10-30 → 2026-11-06 (+7d) |  | -118.11d → -125.71d |
| MOD-RWN-PL-723 | Coating / Wrapping UPVC Con. for Rainwater Drainage Network Zone 3 | 2026-10-30 → 2026-11-06 (+7d) | 2026-11-20 → 2026-11-27 (+7d) |  | -118.11d → -125.71d |
| MOD-RWN-PL-413 | Backfilling & compaction UPVC Con. for Rainwater Drainage Network Zone 3 | 2026-11-20 → 2026-11-27 (+7d) | 2026-11-22 → 2026-11-29 (+7d) |  | -118.11d → -125.71d |
| 5 | **Precast Concrete Box Culverts** |  | 2026-12-17 → 2026-12-26 (+9d) |  |  |
| 1 | **Box Culverts (500x500mm to 3500x800mm)** |  | 2026-12-17 → 2026-12-26 (+9d) |  |  |
| MOD-RWN-PC-254 | Dewatering and trench shoring Box culvert for Rainwater Drainage Network Zone 3 |  | 2026-11-01 → 2026-11-09 (+8d) |  | -122.56d → -129.16d |
| MOD-RWN-PC-264 | Bedding preparation (gravel/lean concrete) Box culvert for Rainwater Drainage Network Zone 3 | 2026-11-01 → 2026-11-09 (+8d) | 2026-11-05 → 2026-11-14 (+9d) |  | -122.56d → -129.16d |
| MOD-RWN-PC-274 | Installation of box culvert units Box culvert for Rainwater Drainage Network Zone 3 | 2026-11-05 → 2026-11-14 (+9d) | 2026-11-17 → 2026-11-25 (+8d) |  | -122.56d → -129.16d |
| MOD-RWN-PC-284 | Alignment and joint sealing Box culvert for Rainwater Drainage Network Zone 3 | 2026-11-17 → 2026-11-25 (+8d) | 2026-11-22 → 2026-11-30 (+8d) |  | -122.56d → -129.16d |
| MOD-RWN-PC-294 | Construct headwalls/wing walls (if needed) Box culvert for Rainwater Drainage Network Zone 3 | 2026-11-22 → 2026-11-30 (+8d) | 2026-12-06 → 2026-12-14 (+8d) |  | -122.56d → -129.16d |
| MOD-RWN-PC-304 | Backfilling and compaction Box culvert for Rainwater Drainage Network Zone 3 | 2026-12-06 → 2026-12-14 (+8d) | 2026-12-14 → 2026-12-22 (+8d) |  | -122.56d → -129.16d |
| MOD-RWN-PC-314 | Surface finishing Box culvert for Rainwater Drainage Network Zone 3 | 2026-12-14 → 2026-12-22 (+8d) | 2026-12-17 → 2026-12-26 (+9d) |  | -122.56d → -129.16d |
| 4 | **Manholes** | 2026-11-05 → 2026-11-14 (+9d) | 2026-12-17 → 2026-12-26 (+9d) |  |  |
| 1 | **Circular GRP Manholes (1200–1800mm dia)** | 2026-11-05 → 2026-11-14 (+9d) | 2026-12-13 → 2026-12-21 (+8d) |  |  |
| MOD-RWN-MH-234 | Excavate to full manhole depth Circular Manhole for Rainwater Drainage Network Zone 3 | 2026-11-05 → 2026-11-14 (+9d) | 2026-11-14 → 2026-11-22 (+8d) |  | -118.56d → -125.16d |
| MOD-RWN-MH-244 | Dewatering and safety barriers Circular Manhole for Rainwater Drainage Network Zone 3 | 2026-11-14 → 2026-11-22 (+8d) | 2026-11-21 → 2026-11-29 (+8d) |  | -118.56d → -125.16d |
| MOD-RWN-MH-254 | Concrete base construction Circular Manhole for Rainwater Drainage Network Zone 3 | 2026-11-21 → 2026-11-29 (+8d) | 2026-11-23 → 2026-12-01 (+8d) |  | -118.56d → -125.16d |
| MOD-RWN-MH-264 | Install GRP manhole shaft sections Circular Manhole for Rainwater Drainage Network Zone 3 | 2026-11-23 → 2026-12-01 (+8d) | 2026-12-01 → 2026-12-09 (+8d) |  | -118.56d → -125.16d |
| MOD-RWN-MH-274 | Place slab and cover frame Circular Manhole for Rainwater Drainage Network Zone 3 | 2026-12-01 → 2026-12-09 (+8d) | 2026-12-08 → 2026-12-16 (+8d) |  | -118.56d → -125.16d |
| MOD-RWN-MH-284 | Waterproofing Circular Manhole for Rainwater Drainage Network Zone 3 | 2026-12-08 → 2026-12-16 (+8d) | 2026-12-10 → 2026-12-19 (+9d) |  | -118.56d → -125.16d |
| MOD-RWN-MH-294 | Backfilling and compaction Circular Manhole for Rainwater Drainage Network Zone 3 | 2026-12-10 → 2026-12-19 (+9d) | 2026-12-13 → 2026-12-21 (+8d) |  | -118.56d → -125.16d |
| 3 | **Concrete Manholes for 1500x1500 Box Pipes** | 2026-11-05 → 2026-11-14 (+9d) | 2026-12-13 → 2026-12-21 (+8d) |  |  |
| MOD-RWN-MH-374 | Excavation Concrete Manhole 1.5x1.5 for Rainwater Drainage Network Zone 3 | 2026-11-05 → 2026-11-14 (+9d) | 2026-11-12 → 2026-11-21 (+9d) |  | -118.56d → -125.16d |
| MOD-RWN-MH-384 | Base slab and wall shuttering Concrete Manhole 1.5x1.5 for Rainwater Drainage Network Zone 3 | 2026-11-12 → 2026-11-21 (+9d) | 2026-11-17 → 2026-11-25 (+8d) |  | -118.56d → -125.16d |
| MOD-RWN-MH-394 | Wall reinforcement and casting Concrete Manhole 1.5x1.5 for Rainwater Drainage Network Zone 3 | 2026-11-17 → 2026-11-25 (+8d) | 2026-11-26 → 2026-12-05 (+9d) |  | -118.56d → -125.16d |
| MOD-RWN-MH-404 | Roof slab with openings Concrete Manhole 1.5x1.5 for Rainwater Drainage Network Zone 3 | 2026-11-26 → 2026-12-05 (+9d) | 2026-12-01 → 2026-12-09 (+8d) |  | -118.56d → -125.16d |

| ID | Task | Start | Finish | Complete | Total float |
| --- | --- | --- | --- | --- | --- |
| MOD-RWN-MH-414 | Masonry/benching works inside Concrete Manhole 1.5x1.5 for Rainwater Drainage Network Zone 3 | 2026-12-01 → 2026-12-09 (+8d) | 2026-12-07 → 2026-12-15 (+8d) |  | -118.56d → -125.16d |
| MOD-RWN-MH-424 | Install cover and frame Concrete Manhole 1.5x1.5 for Rainwater Drainage Network Zone 3 | 2026-12-07 → 2026-12-15 (+8d) | 2026-12-09 → 2026-12-17 (+8d) |  | -118.56d → -125.16d |
| MOD-RWN-MH-434 | Backfill in layers Concrete Manhole 1.5x1.5 for Rainwater Drainage Network Zone 3 | 2026-12-09 → 2026-12-17 (+8d) | 2026-12-13 → 2026-12-21 (+8d) |  | -118.56d → -125.16d |
| 2 | **Concrete Manholes for 1000x1000 Box Pipes** | 2026-11-05 → 2026-11-14 (+9d) | 2026-12-17 → 2026-12-26 (+9d) |  |  |
| MOD-RWN-MH-304 | Excavation Concrete Manhole 1x1 for Rainwater Drainage Network Zone 3 | 2026-11-05 → 2026-11-14 (+9d) | 2026-11-12 → 2026-11-21 (+9d) |  | -122.56d → -129.16d |
| MOD-RWN-MH-314 | Base slab and wall shuttering Concrete Manhole 1x1 for Rainwater Drainage Network Zone 3 | 2026-11-12 → 2026-11-21 (+9d) | 2026-11-17 → 2026-11-25 (+8d) |  | -122.56d → -129.16d |
| MOD-RWN-MH-324 | Wall reinforcement and casting Concrete Manhole 1x1 for Rainwater Drainage Network Zone 3 | 2026-11-17 → 2026-11-25 (+8d) | 2026-11-24 → 2026-12-02 (+8d) |  | -122.56d → -129.16d |
| MOD-RWN-MH-334 | Roof slab with openings Concrete Manhole 1x1 for Rainwater Drainage Network Zone 3 | 2026-11-24 → 2026-12-02 (+8d) | 2026-11-29 → 2026-12-07 (+8d) |  | -122.56d → -129.16d |
| MOD-RWN-MH-344 | Masonry/benching works inside Concrete Manhole 1x1 for Rainwater Drainage Network Zone 3 | 2026-11-29 → 2026-12-07 (+8d) | 2026-12-07 → 2026-12-15 (+8d) |  | -122.56d → -129.16d |
| MOD-RWN-MH-354 | Install cover and frame Concrete Manhole 1x1 for Rainwater Drainage Network Zone 3 | 2026-12-07 → 2026-12-15 (+8d) | 2026-12-12 → 2026-12-20 (+8d) |  | -122.56d → -129.16d |
| MOD-RWN-MH-364 | Backfill in layers Concrete Manhole 1x1 for Rainwater Drainage Network Zone 3 | 2026-12-12 → 2026-12-20 (+8d) | 2026-12-17 → 2026-12-26 (+9d) |  | -122.56d → -129.16d |
| 2 | **Chambers and Catch Basins** |  | 2026-11-11 → 2026-11-17 (+6d) |  |  |
| 1 | **Gully Outfalls** |  | 2026-11-07 → 2026-11-15 (+8d) |  |  |
| MOD-RWN-CC-198 | Provide slope protection (riprap) Gully Outfall for Rainwater Drainage Network Zone 3 |  | 2026-11-05 → 2026-11-14 (+9d) |  | -87.72d → -94.32d |
| MOD-RWN-CC-208 | Compact and shape terrain Gully Outfall for Rainwater Drainage Network Zone 3 |  | 2026-11-07 → 2026-11-15 (+8d) |  | -87.72d → -94.32d |
| 2 | **Rainwater Catch Basins** |  | 2026-11-05 → 2026-11-14 (+9d) |  |  |
| MOD-RWN-CC-258 | Backfill and surface finish Catch Basin for Rainwater Drainage Network Zone 3 |  | 2026-11-05 → 2026-11-14 (+9d) | 94% → 95% | -86.68d → -93.26d |
| 3 | **Precast Chambers for Absorption Pits** |  | 2026-11-11 → 2026-11-17 (+6d) |  |  |
| MOD-RWN-CC-308 | Backfill and compact Absorption Pit for Rainwater Drainage Network Zone 3 | 2026-11-05 → 2026-10-28 A (-8d) | 2026-11-11 → 2026-11-17 (+6d) | 0% → 23% | -91.56d → -97.01d |
| 3 | **Gully Outfalls to Swales** |  | 2026-11-26 → 2026-12-05 (+9d) |  |  |
| 1 | **Gully Outfalls to Swales** |  | 2026-11-10 → 2026-11-18 (+8d) |  |  |
| MOD-RWN-GO-111 | Excavate outfall channel Gully Outfall to Swales for Rainwater Drainage Network Zone 3 |  | 2026-11-05 → 2026-11-14 (+9d) |  | -90.56d → -97.16d |
| MOD-RWN-GO-121 | Place concrete apron or pipes Gully Outfall to Swales for Rainwater Drainage Network Zone 3 |  | 2026-11-07 → 2026-11-15 (+8d) |  | -90.56d → -97.16d |
| MOD-RWN-GO-131 | Provide slope protection (riprap) Gully Outfall to Swales for Rainwater Drainage Network Zone 3 |  | 2026-11-08 → 2026-11-16 (+8d) |  | -90.56d → -97.16d |
| MOD-RWN-GO-141 | Compact and shape terrain Gully Outfall to Swales for Rainwater Drainage Network Zone 3 | 2026-11-08 → 2026-11-16 (+8d) | 2026-11-10 → 2026-11-18 (+8d) |  | -90.56d → -97.16d |
| 2 | **Riprap Works & Protection** | 2026-11-05 → 2026-11-14 (+9d) | 2026-11-26 → 2026-12-05 (+9d) |  |  |
| MOD-RWN-GO-151 | Lay filter fabric/membrane for Rainwater Drainage Network Zone 3 | 2026-11-05 → 2026-11-14 (+9d) | 2026-11-09 → 2026-11-17 (+8d) |  | -104.56d → -111.16d |
| MOD-RWN-GO-161 | Place riprap/stone layer for Rainwater Drainage Network Zone 3 | 2026-11-09 → 2026-11-17 (+8d) | 2026-11-21 → 2026-11-29 (+8d) |  | -104.56d → -111.16d |
| MOD-RWN-GO-171 | Compact edges for Rainwater Drainage Network Zone 3 | 2026-11-21 → 2026-11-29 (+8d) | 2026-11-24 → 2026-12-02 (+8d) |  | -104.56d → -111.16d |
| MOD-RWN-GO-181 | Ensure hydraulic flow direction for Rainwater Drainage Network Zone 3 | 2026-11-24 → 2026-12-02 (+8d) | 2026-11-26 → 2026-12-05 (+9d) |  | -104.56d → -111.16d |
| 6 | **Backfilling & Bedding** |  | 2026-11-16 → 2026-11-24 (+8d) |  |  |
| 1 | **Backfilling Materials (Type A – 201–700mm Pipes)** |  | 2026-10-25 → 2026-11-02 (+8d) |  |  |
| MOD-RWN-BB-112 | Place granular bedding under pipe for Rainwater Drainage Network Zone 3 |  | 2026-10-24 → 2026-10-31 (+7d) |  | -76.65d → -83.25d |
| MOD-RWN-BB-122 | Lay and align pipe for Rainwater Drainage Network Zone 3 |  | 2026-10-24 → 2026-11-01 (+8d) |  | -76.65d → -83.25d |
| MOD-RWN-BB-132 | Backfill up to spring line for Rainwater Drainage Network Zone 3 |  | 2026-10-25 → 2026-11-01 (+7d) |  | -76.65d → -83.25d |
| MOD-RWN-BB-142 | Compact layer-wise for Rainwater Drainage Network Zone 3 |  | 2026-10-25 → 2026-11-02 (+8d) |  | -76.65d → -83.25d |
| MOD-RWN-BB-152 | Final fill to subgrade level for Rainwater Drainage Network Zone 3 |  | 2026-10-25 → 2026-11-02 (+8d) |  | -76.65d → -83.25d |
| 2 | **Gravel Bedding & Filter Cloth for uPVC Drain Pipes** |  | 2026-11-16 → 2026-11-24 (+8d) |  |  |
| MOD-RWN-BB-162 | Line trench with filter cloth for Rainwater Drainage Network Zone 3 |  | 2026-10-24 → 2026-11-01 (+8d) |  | -95.56d → -102.16d |
| MOD-RWN-BB-172 | Place and compact gravel bedding for Rainwater Drainage Network Zone 3 |  | 2026-10-25 → 2026-11-02 (+8d) |  | -95.56d → -102.16d |
| MOD-RWN-BB-182 | Lay pipe within gravel zone for Rainwater Drainage Network Zone 3 |  | 2026-10-27 → 2026-11-04 (+8d) |  | -95.56d → -102.16d |
| MOD-RWN-BB-192 | Wrap filter cloth above pipe for Rainwater Drainage Network Zone 3 |  | 2026-11-02 → 2026-11-10 (+8d) |  | -95.56d → -102.16d |
| MOD-RWN-BB-202 | Final fill and trench restoration for Rainwater Drainage Network Zone 3 | 2026-11-02 → 2026-11-10 (+8d) | 2026-11-16 → 2026-11-24 (+8d) |  | -95.56d → -102.16d |
| 7 | **Deep Basin for Groundwater Collection (2.5–3.0m)** |  | 2026-11-16 → 2026-11-24 (+8d) |  |  |
| MOD-RWN-DB-002 | Base and side wall construction (cast-in-situ or precast) for Rainwater Drainage Network Zone 3 |  | 2026-10-25 → 2026-11-02 (+8d) |  | -95.71d → -102.31d |
| MOD-RWN-DB-003 | Pipe connections for inflow for Rainwater Drainage Network Zone 3 |  | 2026-10-27 → 2026-11-04 (+8d) |  | -95.71d → -102.31d |
| MOD-RWN-DB-004 | Cover slab and access shaft for Rainwater Drainage Network Zone 3 |  | 2026-10-31 → 2026-11-07 (+7d) |  | -95.71d → -102.31d |
| MOD-RWN-DB-005 | Waterproofing & sealant for Rainwater Drainage Network Zone 3 |  | 2026-11-08 → 2026-11-16 (+8d) |  | -95.71d → -102.31d |
| MOD-RWN-DB-006 | Backfill in controlled layers for Rainwater Drainage Network Zone 3 | 2026-11-08 → 2026-11-16 (+8d) | 2026-11-16 → 2026-11-24 (+8d) |  | -95.71d → -102.31d |
| 13 | **Potable Water Network Zone 3** |  | 2027-01-12 → 2027-01-19 (+7d) |  |  |
| 13 | **Pipe Installation Works** |  | 2026-11-03 → 2026-11-10 (+7d) |  |  |
| MOD-PWN-PI-323 | Lean Concrete / Pipe Bedding Preparation for Potable Water Network Zone 3 |  | 2026-10-25 → 2026-11-01 (+7d) |  | 58.15d → 50.55d |
| MOD-PWN-PI-333 | HDPE Pipe Laying (200 mm to 710 mm) for Potable Water Network Zone 3 |  | 2026-10-29 → 2026-11-05 (+7d) |  | 58.15d → 50.55d |
| MOD-PWN-PI-343 | Test (Pressure-slope) for Potable Water Network Zone 3 |  | 2026-10-30 → 2026-11-07 (+8d) |  | 58.15d → 50.55d |
| MOD-PWN-PI-353 | Coating / Wrapping for Potable Water Network Zone 3 |  | 2026-11-01 → 2026-11-09 (+8d) |  | 58.15d → 50.55d |
| MOD-PWN-PI-363 | Backfilling & Warrning Tape for Potable Water Network Zone 3 |  | 2026-11-03 → 2026-11-10 (+7d) |  | 58.15d → 50.55d |
| 2 | **Valve Installation & Chambers** |  | 2026-11-16 → 2026-11-21 (+5d) |  |  |
| MOD-PWN-VC-87 | Butterfly Valves (355, 500, 630 mm) for Potable Water Network Zone 3 |  | 2026-10-24 → 2026-10-31 (+7d) |  | 39.06d → 34.73d |
| MOD-PWN-VC-97 | 3-exit (2 x 2.5-inch and 1 x 4-inch) dry vacuum cylinder detachable fire nozzle for Potable Water Network Zone 3 |  | 2026-10-24 → 2026-10-31 (+7d) | 98% → 99% | 39.06d → 34.73d |
| MOD-PWN-VC-107 | Valve Chamber Excavation for Potable Water Network Zone 3 |  | 2026-10-24 → 2026-10-31 (+7d) |  | 39.06d → 34.56d |
| MOD-PWN-VC-117 | RC Slab, Walls, or Precast Chambers for Potable Water Network Zone 3 |  | 2026-10-24 → 2026-10-31 (+7d) |  | 39.06d → 34.56d |
| MOD-PWN-VC-77 | Gate Valves (225–710 mm) for Potable Water Network Zone 3 |  | 2026-10-24 → 2026-10-31 (+7d) |  | 39.06d → 34.73d |
| MOD-PWN-VC-127 | Fixing Covers, Gratings, Frames for Potable Water Network Zone 3 | 2026-10-24 → 2026-10-27 A (+3d) | 2026-11-09 → 2026-11-14 (+5d) | 0% → 15% | 39.06d → 34.56d |
| MOD-PWN-VC-137 | Tagging & Painting for Potable Water Network Zone 3 | 2026-11-09 → 2026-11-14 (+5d) | 2026-11-16 → 2026-11-21 (+5d) |  | 39.06d → 34.56d |
| 3 | **Flow Meter Installation** |  | 2026-12-05 → 2026-12-12 (+7d) |  |  |
| MOD-PWN-FM-55 | Chamber Excavation (280 mm, 300 mm, 500 mm, 800 mm) for Potable Water Network Zone 3 |  | 2026-10-24 → 2026-11-01 (+8d) |  | 42.4d → 35.8d |
| MOD-PWN-FM-65 | RC or Precast Chamber Construction for Potable Water Network Zone 3 |  | 2026-10-28 → 2026-11-04 (+7d) |  | 42.4d → 35.8d |
| MOD-PWN-FM-75 | Flowmeter Installation & Pipe Integration for Potable Water Network Zone 3 |  | 2026-11-25 → 2026-12-02 (+7d) |  | 23.35d → 16.75d |
| MOD-PWN-FM-85 | Wiring/Cabling if applicable for Potable Water Network Zone 3 |  | 2026-12-01 → 2026-12-08 (+7d) |  | 23.35d → 16.75d |
| MOD-PWN-FM-95 | Calibration & Commissioning for Potable Water Network Zone 3 | 2026-12-01 → 2026-12-08 (+7d) | 2026-12-05 → 2026-12-12 (+7d) |  | 23.35d → 16.75d |

| ID | Task | Start | Finish | Complete | Total float |
| --- | --- | --- | --- | --- | --- |
| 4 | **Washout & Air Valve Chambers** |  | 2026-10-29 → 2026-11-05 (+7d) |  |  |
| MOD-PWN-WA-87 | RC Blinding + Base + Walls for Potable Water Network Zone 3 |  | 2026-10-24 → 2026-10-31 (+7d) | 95% → 96% | 53.94d → 47.65d |
| MOD-PWN-WA-97 | Pipe Work for Potable Water Network Zone 3 |  | 2026-10-25 → 2026-11-02 (+8d) |  | 53.94d → 47.65d |
| MOD-PWN-WA-107 | Washout (Valve + Outlet) Installation for Potable Water Network Zone 3 |  | 2026-10-26 → 2026-11-02 (+7d) | 90% → 93% | 53.94d → 47.65d |
| MOD-PWN-WA-117 | Air Valve Rooms (Valve + Outlet) Installation for Potable Water Network Zone 3 |  | 2026-10-27 → 2026-11-03 (+7d) |  | 53.94d → 47.65d |
| MOD-PWN-WA-127 | Covers, Ladders & Tags for Potable Water Network Zone 3 |  | 2026-10-27 → 2026-11-03 (+7d) | 88% → 89% | 53.94d → 47.65d |
| MOD-PWN-WA-137 | Backfilling & Final Finishing for Potable Water Network Zone 3 | 2026-10-27 → 2026-11-03 (+7d) | 2026-10-29 → 2026-11-05 (+7d) |  | 53.94d → 47.65d |
| 5 | **Pumping Station (Structure & Civil Works)** | 2026-10-24 → 2026-10-31 (+7d) | 2027-01-07 → 2027-01-16 (+9d) |  |  |
| MOD-PWN-PS-66 | Excavation & Blinding for Potable Water Network Zone 3 | 2026-10-24 → 2026-10-31 (+7d) | 2026-11-03 → 2026-11-11 (+8d) |  | -9.8d → -16.4d |
| MOD-PWN-PS-76 | Reinforced Concrete/GRP Shell Construction for Potable Water Network Zone 3 | 2026-11-04 → 2026-11-11 (+7d) | 2026-11-12 → 2026-11-21 (+9d) |  | -9.8d → -16.4d |
| MOD-PWN-PS-86 | Access Ladders, Tight Cover, Surface Guttering for Potable Water Network Zone 3 | 2026-11-14 → 2026-11-21 (+7d) | 2026-11-18 → 2026-11-26 (+8d) |  | -9.8d → -16.4d |
| MOD-PWN-PS-96 | Internal piping & embedded sleeves for Potable Water Network Zone 3 | 2026-11-19 → 2026-11-26 (+7d) | 2026-12-03 → 2026-12-12 (+9d) |  | -9.8d → -16.4d |
| MOD-PWN-PS-106 | Pump Base Pads + Grouting for Potable Water Network Zone 3 | 2026-12-05 → 2026-12-12 (+7d) | 2026-12-19 → 2026-12-27 (+8d) |  | -6.6d → -13.2d |
| MOD-PWN-PS-116 | Backfilling & External Finishes for Potable Water Network Zone 3 | 2026-12-20 → 2026-12-27 (+7d) | 2027-01-07 → 2027-01-16 (+9d) |  | -6.6d → -13.2d |
| 6 | **Pump Station Building** | 2026-12-05 → 2026-12-12 (+7d) | 2027-01-09 → 2027-01-17 (+8d) |  |  |
| MOD-PWN-PB-33 | Structure Construction (as per architectural drawings) for Potable Water Network Zone 3 | 2026-12-05 → 2026-12-12 (+7d) | 2026-12-19 → 2026-12-27 (+8d) |  | -9.8d → -16.4d |
| MOD-PWN-PB-43 | 5-ton Hoist Installation for Potable Water Network Zone 3 | 2026-12-20 → 2026-12-27 (+7d) | 2026-12-24 → 2027-01-02 (+9d) |  | -9.8d → -16.4d |
| MOD-PWN-PB-53 | Finishes, Doors, Ventilation for Potable Water Network Zone 3 | 2026-12-26 → 2027-01-02 (+7d) | 2027-01-09 → 2027-01-17 (+8d) |  | -9.8d → -16.4d |
| 7 | **Pumping Equipment & Fire Systems** | 2026-12-05 → 2026-12-12 (+7d) | 2027-01-05 → 2027-01-13 (+8d) |  |  |
| MOD-PWN-PE-88 | Main Pumps (250 kW, 295 L/s @ 60 m head) for Potable Water Network Zone 3 | 2026-12-05 → 2026-12-12 (+7d) | 2026-12-20 → 2026-12-28 (+8d) |  | -4.6d → -11.2d |
| MOD-PWN-PE-108 | Diesel Fire Water Pump (64 L/s @ 60 m) for Potable Water Network Zone 3 | 2026-12-21 → 2026-12-28 (+7d) | 2026-12-27 → 2027-01-04 (+8d) |  | -4.6d → -11.2d |
| MOD-PWN-PE-118 | Electric Jockey Pump for Potable Water Network Zone 3 | 2026-12-21 → 2026-12-28 (+7d) | 2026-12-27 → 2027-01-04 (+8d) |  | -4.6d → -11.2d |
| MOD-PWN-PE-128 | Submersible Fire Pumps (2 pcs, 10 L/s @ 10 m) for Potable Water Network Zone 3 | 2026-12-21 → 2026-12-28 (+7d) | 2026-12-24 → 2027-01-02 (+9d) |  | -4.6d → -11.2d |
| MOD-PWN-PE-98 | Electric Fire Water Pump (64 L/s @ 60 m) for Potable Water Network Zone 3 | 2026-12-21 → 2026-12-28 (+7d) | 2026-12-29 → 2027-01-06 (+8d) |  | -4.6d → -11.2d |
| MOD-PWN-PE-138 | Pipework connections within Pump Room for Potable Water Network Zone 3 | 2026-12-26 → 2027-01-02 (+7d) | 2026-12-30 → 2027-01-07 (+8d) |  | -4.6d → -11.2d |
| MOD-PWN-PE-148 | MCC & DB panel installation for Potable Water Network Zone 3 | 2026-12-31 → 2027-01-07 (+7d) | 2027-01-02 → 2027-01-10 (+8d) |  | -4.6d → -11.2d |
| MOD-PWN-PE-158 | Flow meter on 800mm pipe including flow meter chamber and 2-2.5m depth for Potable Water Network Zone 3 | 2027-01-03 → 2027-01-10 (+7d) | 2027-01-05 → 2027-01-13 (+8d) |  | -4.6d → -11.2d |
| 8 | **Surge Protection** | 2026-12-31 → 2027-01-07 (+7d) | 2027-01-05 → 2027-01-13 (+8d) |  |  |
| MOD-PWN-SP-22 | Surge Vessel Installation for Potable Water Network Zone 3 | 2026-12-31 → 2027-01-07 (+7d) | 2027-01-04 → 2027-01-12 (+8d) |  | -4.6d → -11.2d |
| MOD-PWN-SP-32 | Pipe Integration as per Surge Analysis for Potable Water Network Zone 3 | 2027-01-05 → 2027-01-12 (+7d) | 2027-01-05 → 2027-01-13 (+8d) |  | -4.6d → -11.2d |
| 9 | **Power & Generator System** | 2026-12-21 → 2026-12-28 (+7d) | 2027-01-03 → 2027-01-11 (+8d) |  |  |
| MOD-PWN-PG-44 | 500 kVA Standby Generator Installation for Potable Water Network Zone 3 | 2026-12-21 → 2026-12-28 (+7d) | 2026-12-24 → 2027-01-02 (+9d) |  | -2.6d → -9.2d |
| MOD-PWN-PG-54 | Canopy, Foundation & Fuel Tank for Potable Water Network Zone 3 | 2026-12-21 → 2026-12-28 (+7d) | 2026-12-27 → 2027-01-04 (+8d) |  | -2.6d → -9.2d |
| MOD-PWN-PG-64 | Electrical Cabling, Circuit Breakers for Potable Water Network Zone 3 | 2026-12-28 → 2027-01-04 (+7d) | 2026-12-31 → 2027-01-09 (+9d) |  | -2.6d → -9.2d |
| MOD-PWN-PG-74 | Earthing & Commissioning for Potable Water Network Zone 3 | 2027-01-02 → 2027-01-09 (+7d) | 2027-01-03 → 2027-01-11 (+8d) |  | -2.6d → -9.2d |
| 10 | **Chlorination System** | 2026-12-21 → 2026-12-28 (+7d) | 2027-01-05 → 2027-01-13 (+8d) |  |  |
| MOD-PWN-CS-33 | Chlorination Device Supply & Installation for Potable Water Network Zone 3 | 2026-12-21 → 2026-12-28 (+7d) | 2026-12-28 → 2027-01-05 (+8d) |  | -4.6d → -11.2d |
| MOD-PWN-CS-43 | Connections to Main Line or Disinfection Chamber for Potable Water Network Zone 3 | 2026-12-29 → 2027-01-05 (+7d) | 2027-01-02 → 2027-01-10 (+8d) |  | -4.6d → -11.2d |
| MOD-PWN-CS-53 | Control Integration for Potable Water Network Zone 3 | 2027-01-03 → 2027-01-10 (+7d) | 2027-01-05 → 2027-01-13 (+8d) |  | -4.6d → -11.2d |
| 11 | **Water Storage System** |  | 2027-01-12 → 2027-01-19 (+7d) |  |  |
| MOD-PWN-WS-11 | Structural tanks for supply or pressure equalization for Potable Water Network Zone 3 |  | 2027-01-12 → 2027-01-19 (+7d) |  | -9.8d → -16.4d |
| 12 | **Street Lighting** |  | 2026-12-27 → 2027-01-03 (+7d) |  |  |
| MOD-PWN-SL-75 | Pole & Fixture Installation for Potable Water Network Zone 3 |  | 2026-12-20 → 2026-12-27 (+7d) |  | 4.24d → -2.36d |
| MOD-PWN-SL-65 | Conduits, Cabling, Backfilling for Potable Water Network Zone 3 |  | 2026-12-20 → 2026-12-27 (+7d) |  | 4.24d → -2.36d |
| MOD-PWN-SL-85 | Connection to Main Supply for Potable Water Network Zone 3 | 2026-12-20 → 2026-12-27 (+7d) | 2026-12-27 → 2027-01-03 (+7d) |  | 4.24d → -2.36d |
| MOD-PWN-SL-95 | Testing & Lighting Commissioning for Potable Water Network Zone 3 | 2026-12-20 → 2026-12-27 (+7d) | 2026-12-27 → 2027-01-03 (+7d) |  | 4.24d → -2.36d |
| 6 | **Irrigation Network Zone 3** |  | 2026-11-29 → 2026-12-07 (+8d) |  |  |
| 1 | **Excavation, Pipe Laying & Backfilling** |  | 2026-10-30 → 2026-11-07 (+8d) |  |  |
| MOD-IRN-EB-120 | Trench Excavation for Irrigation Network Zone 3 |  | 2026-10-26 → 2026-11-02 (+7d) |  | 61.48d → 53.88d |
| MOD-IRN-EB-130 | Lean Concrete / Pipe Bedding with Type B Material for Irrigation Network Zone 3 |  | 2026-10-26 → 2026-11-03 (+8d) |  | 61.48d → 53.88d |
| MOD-IRN-EB-140 | HDPE Pipe Laying (125 mm to 630 mm) for Irrigation Network Zone 3 |  | 2026-10-29 → 2026-11-05 (+7d) |  | 61.48d → 53.88d |
| MOD-IRN-EB-150 | Test (Pressure-slope) for Irrigation Network Zone 3 |  | 2026-10-29 → 2026-11-06 (+8d) |  | 61.48d → 53.88d |
| MOD-IRN-EB-180 | Coating / Wrapping for Irrigation Network Zone 3 |  | 2026-10-29 → 2026-11-06 (+8d) |  | 61.48d → 53.88d |
| MOD-IRN-EB-190 | Backfilling & Warrning Tape for Irrigation Network Zone 3 |  | 2026-10-30 → 2026-11-07 (+8d) |  | 61.48d → 53.88d |
| 2 | **Valves and Appurtenances** |  | 2026-10-27 → 2026-11-03 (+7d) |  |  |
| MOD-IRN-VA-65 | Supply & Installation of Valves (Butterfly Valve) for Irrigation Network Zone 3 |  | 2026-10-25 → 2026-11-01 (+7d) | 80% → 85% | 56d → 50.25d |
| MOD-IRN-VA-75 | Installation of Flanges, Bolts, Collars, Nuts for Irrigation Network Zone 3 |  | 2026-10-26 → 2026-11-02 (+7d) | 80% → 85% | 56d → 50.25d |
| MOD-IRN-VA-85 | Valve Pressure Testing for Irrigation Network Zone 3 |  | 2026-10-26 → 2026-11-02 (+7d) | 80% → 85% | 56d → 50.25d |
| MOD-IRN-VA-95 | Support Brackets/Anchor Blocks for Irrigation Network Zone 3 |  | 2026-10-27 → 2026-11-03 (+7d) | 60% → 70% | 56d → 50.25d |
| 3 | **Valve Rooms** |  | 2026-10-24 → 2026-10-31 (+7d) |  |  |
| MOD-IRN-VR-137 | Backfilling and Finishing Valve Chamber for Irrigation Network Zone 3 |  | 2026-10-24 → 2026-10-31 (+7d) |  | 59.1d → 52.5d |
| 4 | **Washout Chambers** |  | 2026-10-25 → 2026-11-01 (+7d) |  |  |
| MOD-IRN-WC-96 | Washout Valve & Pipe Connection Washout Chamber for Irrigation Network Zone 3 |  | 2026-10-24 → 2026-11-01 (+8d) |  | 58.1d → 51.5d |
| MOD-IRN-WC-106 | Manhole Frame, Cover & Ladder Fixing Washout Chamber for Irrigation Network Zone 3 |  | 2026-10-24 → 2026-11-01 (+8d) |  | 58.1d → 51.5d |
| MOD-IRN-WC-116 | Backfilling & Reinstatement Washout Chamber for Irrigation Network Zone 3 |  | 2026-10-25 → 2026-11-01 (+7d) |  | 58.1d → 51.5d |
| 5 | **Air Valve Chambers** |  | 2026-10-24 → 2026-10-31 (+7d) |  |  |
| MOD-IRN-AC-95 | Cover Fixing & Finishing Air Valve Chamber for Irrigation Network Zone 3 |  | 2026-10-24 → 2026-10-31 (+7d) |  | 59.3d → 52.7d |
| 6 | **Flow Meter Chambers** |  | 2026-11-29 → 2026-12-07 (+8d) |  |  |
| MOD-IRN-FC-76 | RCC Base & Wall Construction Flow Meter Chamber for Irrigation Network Zone 3 |  | 2026-10-24 → 2026-11-01 (+8d) |  | 50d → 43.4d |
| MOD-IRN-FC-86 | Flow Meter Installation (280, 300, 500 mm) Flow Meter Chamber for Irrigation Network Zone 3 |  | 2026-11-21 → 2026-11-29 (+8d) |  | 27.55d → 20.95d |

| ID | Task | Start | Finish | Complete | Total float |
| --- | --- | --- | --- | --- | --- |
| MOD-IRN-FC-96 | Integration with Pipework Flow Meter Chamber for Irrigation Network Zone 3 |  | 2026-11-22 → 2026-11-30 (+8d) |  | 27.55d → 20.95d |
| MOD-IRN-FC-106 | Testing & Calibration Flow Meter Chamber for Irrigation Network Zone 3 |  | 2026-11-24 → 2026-12-02 (+8d) |  | 27.55d → 20.95d |
| MOD-IRN-FC-116 | Cover and Access Arrangement Flow Meter Chamber for Irrigation Network Zone 3 | 2026-11-24 → 2026-12-02 (+8d) | 2026-11-29 → 2026-12-07 (+8d) |  | 27.55d → 20.95d |
| 5 | **Sewerage Network Zone 2** |  | 2026-12-28 → 2027-01-05 (+8d) |  |  |
| 1 | **Pipework: Supply, Installation, and Testing** |  | 2026-12-16 → 2026-12-24 (+8d) |  |  |
| 3 | **HDPE Pressure Pipes Installation (250mm–630mm)** |  | 2026-12-16 → 2026-12-24 (+8d) |  |  |
| MOD-SWN-PW-585 | Excavation and Trenching HDPE for Sewerage Network Zone 2 |  | 2026-10-28 → 2026-11-04 (+7d) |  | 73.1d → 65.5d |
| MOD-SWN-PW-595 | Lean Concrete / Bedding HDPE for Sewerage Network Zone 2 |  | 2026-11-05 → 2026-11-13 (+8d) |  | 73.1d → 65.5d |
| MOD-SWN-PW-465 | HDPE Pressure Pipes Installation (250mm–630mm) HDPE for Sewerage Network Zone 2 |  | 2026-11-16 → 2026-11-23 (+7d) |  | 73.1d → 65.5d |
| MOD-SWN-PW-605 | Test (Pressure - Slope) HDPE for Sewerage Network Zone 2 |  | 2026-11-23 → 2026-12-01 (+8d) |  | 91.7d → 84.1d |
| MOD-SWN-PW-615 | Coating / Wrapping HDPE for Sewerage Network Zone 2 |  | 2026-12-01 → 2026-12-09 (+8d) |  | 91.7d → 84.1d |
| MOD-SWN-PW-575 | Backfilling & Warrning Tape HDPE for Sewerage Network Zone 2 | 2026-12-02 → 2026-12-09 (+7d) | 2026-12-16 → 2026-12-24 (+8d) |  | 91.7d → 84.1d |
| 2 | **Fittings and Valves** | 2026-11-16 → 2026-11-23 (+7d) | 2026-12-17 → 2026-12-24 (+7d) |  |  |
| MOD-SWN-FV-5 | Supply & Installation of HDPE Elbows for Sewerage Network Zone 2 | 2026-11-16 → 2026-11-23 (+7d) | 2026-11-23 → 2026-11-30 (+7d) |  | 63.1d → 56.6d |
| MOD-SWN-FV-15 | Gate Valves Installation for Sewerage Network Zone 2 | 2026-11-23 → 2026-11-30 (+7d) | 2026-11-28 → 2026-12-05 (+7d) |  | 63.1d → 56.6d |
| MOD-SWN-FV-25 | Drain Valves Installation for Sewerage Network Zone 2 | 2026-11-28 → 2026-12-05 (+7d) | 2026-12-02 → 2026-12-09 (+7d) |  | 63.1d → 56.6d |
| MOD-SWN-FV-35 | Air Breather & Air Release Valves Installation for Sewerage Network Zone 2 | 2026-12-02 → 2026-12-09 (+7d) | 2026-12-14 → 2026-12-21 (+7d) |  | 63.1d → 56.6d |
| MOD-SWN-FV-45 | Jointing & Piping Accessories Installation for Sewerage Network Zone 2 | 2026-12-14 → 2026-12-21 (+7d) | 2026-12-17 → 2026-12-24 (+7d) |  | 63.1d → 56.6d |
| 3 | **Valve & Flow Meter Chambers** |  | 2026-12-28 → 2027-01-05 (+8d) |  |  |
| 1 | **Valve Chambers Construction** |  | 2026-12-07 → 2026-12-15 (+8d) |  |  |
| MOD-SWN-PW-975 | Excavation Valve Chamber for Sewerage Network Zone 2 |  | 2026-10-27 → 2026-11-04 (+8d) |  | 80.27d → 72.67d |
| MOD-SWN-PW-985 | Lean Concrete / Bedding Valve Chamber for Sewerage Network Zone 2 |  | 2026-11-04 → 2026-11-12 (+8d) |  | 80.27d → 72.67d |
| MOD-SWN-VF-124 | Valve Chambers Construction Valve Chamber for Sewerage Network Zone 2 |  | 2026-11-07 → 2026-11-15 (+8d) |  | 80.27d → 72.67d |
| MOD-SWN-PW-995 | Test Valve Chamber for Sewerage Network Zone 2 | 2026-11-07 → 2026-11-15 (+8d) | 2026-11-22 → 2026-11-30 (+8d) |  | 101.27d → 93.67d |
| MOD-SWN-PW-965 | Backfilling Valve Chamber for Sewerage Network Zone 2 | 2026-11-22 → 2026-11-30 (+8d) | 2026-12-07 → 2026-12-15 (+8d) |  | 101.27d → 93.67d |
| 2 | **Water Drain Chambers Construction** |  | 2026-12-16 → 2026-12-24 (+8d) |  |  |
| MOD-SWN-PW-1015 | Excavation Water Drain Chamber for Sewerage Network Zone 2 |  | 2026-10-28 → 2026-11-04 (+7d) |  | 82.1d → 74.5d |
| MOD-SWN-PW-1025 | Lean Concrete / Bedding Water Drain Chamber for Sewerage Network Zone 2 |  | 2026-11-05 → 2026-11-13 (+8d) |  | 82.1d → 74.5d |
| MOD-SWN-VF-134 | Water Drain Chambers Construction Water Drain Chamber for Sewerage Network Zone 2 |  | 2026-11-16 → 2026-11-24 (+8d) |  | 80.27d → 72.67d |
| MOD-SWN-PW-1035 | Test Water Drain Chamber for Sewerage Network Zone 2 | 2026-11-16 → 2026-11-24 (+8d) | 2026-12-01 → 2026-12-09 (+8d) |  | 91.77d → 84.17d |
| MOD-SWN-PW-1005 | Backfilling Water Drain Chamber for Sewerage Network Zone 2 | 2026-12-01 → 2026-12-09 (+8d) | 2026-12-16 → 2026-12-24 (+8d) |  | 91.77d → 84.17d |
| 3 | **Discharge Chambers Construction** |  | 2026-12-23 → 2026-12-31 (+8d) |  |  |
| MOD-SWN-PW-1055 | Excavation Discharge Chamber for Sewerage Network Zone 2 |  | 2026-11-01 → 2026-11-08 (+7d) |  | 85.3d → 77.7d |
| MOD-SWN-PW-1065 | Lean Concrete / Bedding Discharge Chamber for Sewerage Network Zone 2 |  | 2026-11-11 → 2026-11-19 (+8d) |  | 85.3d → 77.7d |
| MOD-SWN-VF-144 | Discharge Chambers Construction Discharge Chamber for Sewerage Network Zone 2 |  | 2026-11-23 → 2026-12-01 (+8d) |  | 80.27d → 72.67d |
| MOD-SWN-PW-1075 | Test Discharge Chamber for Sewerage Network Zone 2 | 2026-11-23 → 2026-12-01 (+8d) | 2026-12-08 → 2026-12-16 (+8d) |  | 85.27d → 77.67d |
| MOD-SWN-PW-1045 | Backfilling Discharge Chamber for Sewerage Network Zone 2 | 2026-12-08 → 2026-12-16 (+8d) | 2026-12-23 → 2026-12-31 (+8d) |  | 85.27d → 77.67d |
| 4 | **Flow Meter Chambers Construction** |  | 2026-12-28 → 2027-01-05 (+8d) |  |  |
| MOD-SWN-PW-1095 | Excavation Flow Meter Chamber for Sewerage Network Zone 2 |  | 2026-11-01 → 2026-11-08 (+7d) |  | 89.7d → 82.1d |
| MOD-SWN-PW-1105 | Lean Concrete / Bedding Flow Meter Chamber for Sewerage Network Zone 2 |  | 2026-11-13 → 2026-11-21 (+8d) |  | 89.7d → 82.1d |
| MOD-SWN-VF-154 | Flow Meter Chambers Construction Flow Meter Chamber for Sewerage Network Zone 2 | 2026-11-23 → 2026-12-01 (+8d) | 2026-11-28 → 2026-12-06 (+8d) |  | 80.27d → 72.67d |
| MOD-SWN-PW-1115 | Test Flow Meter Chamber for Sewerage Network Zone 2 | 2026-11-28 → 2026-12-06 (+8d) | 2026-12-13 → 2026-12-21 (+8d) |  | 80.27d → 72.67d |
| MOD-SWN-PW-1085 | Backfilling Flow Meter Chamber for Sewerage Network Zone 2 | 2026-12-13 → 2026-12-21 (+8d) | 2026-12-28 → 2027-01-05 (+8d) |  | 80.27d → 72.67d |
| 4 | **Manholes** |  | 2026-12-03 → 2026-12-10 (+7d) |  |  |
| 1 | **1200mm GRP Manholes with Backdrop** |  | 2026-11-28 → 2026-11-30 (+2d) |  |  |
| MOD-SWN-PW-1455 | Excavation 1.2m GRP for Sewerage Network Zone 2 |  | 2026-10-25 → 2026-11-02 (+8d) |  | 105.42d → 98.42d |
| MOD-SWN-PW-1465 | Lean Concrete / Bedding 1.2m GRP for Sewerage Network Zone 2 |  | 2026-10-27 → 2026-11-04 (+8d) |  | 105.42d → 98.42d |
| MOD-SWN-MH-145 | 1200mm GRP Manholes with Backdrop 1.2m GRP for Sewerage Network Zone 2 |  | 2026-10-29 → 2026-11-06 (+8d) |  | 105.42d → 98.42d |
| MOD-SWN-PW-1445 | Backfilling 1.2m GRP for Sewerage Network Zone 2 | 2026-11-13 → 2026-10-28 A (-16d) | 2026-11-28 → 2026-11-30 (+2d) | 0% → 37% | 109.82d → 107.77d |
| MOD-SWN-PW-1475 | Test 1.2m GRP for Sewerage Network Zone 2 | 2026-10-29 → 2026-11-06 (+8d) | 2026-11-13 → 2026-11-21 (+8d) |  | 109.82d → 107.77d |
| 2 | **1500mm GRP Manholes (Standard & Backdrop)** |  | 2026-11-30 → 2026-12-03 (+3d) |  |  |
| MOD-SWN-PW-1495 | Excavation 1.5m GRP for Sewerage Network Zone 2 |  | 2026-10-26 → 2026-11-02 (+7d) |  | 107.1d → 100.1d |
| MOD-SWN-PW-1505 | Lean Concrete / Bedding 1.5m GRP for Sewerage Network Zone 2 |  | 2026-10-28 → 2026-11-04 (+7d) |  | 107.1d → 100.1d |
| MOD-SWN-MH-155 | 1500mm GRP Manholes (Standard & Backdrop) 1.5m GRP for Sewerage Network Zone 2 |  | 2026-10-31 → 2026-11-08 (+8d) |  | 105.42d → 98.42d |
| MOD-SWN-PW-1485 | Backfilling 1.5m GRP for Sewerage Network Zone 2 | 2026-11-15 → 2026-10-28 A (-18d) | 2026-11-30 → 2026-12-03 (+3d) | 0% → 37% | 107.72d → 105.67d |
| MOD-SWN-PW-1515 | Test 1.5m GRP for Sewerage Network Zone 2 | 2026-10-31 → 2026-11-08 (+8d) | 2026-11-15 → 2026-11-23 (+8d) |  | 107.72d → 105.67d |
| 3 | **1800mm GRP Manholes (Standard & Backdrop)** |  | 2026-12-02 → 2026-12-10 (+8d) |  |  |
| MOD-SWN-PW-1535 | Excavation 1.8m GRP for Sewerage Network Zone 2 |  | 2026-10-25 → 2026-11-01 (+7d) |  | 110.46d → 103.46d |
| MOD-SWN-PW-1545 | Lean Concrete / Bedding 1.8m GRP for Sewerage Network Zone 2 |  | 2026-10-26 → 2026-11-03 (+8d) |  | 110.46d → 103.46d |
| MOD-SWN-MH-165 | 1800mm GRP Manholes (Standard & Backdrop) 1.8m GRP for Sewerage Network Zone 2 |  | 2026-11-02 → 2026-11-10 (+8d) |  | 105.42d → 98.42d |
| MOD-SWN-PW-1555 | Test 1.8m GRP for Sewerage Network Zone 2 | 2026-11-02 → 2026-11-10 (+8d) | 2026-11-17 → 2026-11-25 (+8d) |  | 106.02d → 98.42d |
| MOD-SWN-PW-1525 | Backfilling 1.8m GRP for Sewerage Network Zone 2 | 2026-11-17 → 2026-11-25 (+8d) | 2026-12-02 → 2026-12-10 (+8d) |  | 106.02d → 98.42d |
| 4 | **2000mm GRP Manholes (Standard & Backdrop)** |  | 2026-12-03 → 2026-12-05 (+2d) |  |  |
| MOD-SWN-PW-1575 | Excavation 2m GRP for Sewerage Network Zone 2 |  | 2026-10-25 → 2026-11-02 (+8d) |  | 111.53d → 109.48d |
| MOD-SWN-PW-1585 | Lean Concrete / Bedding 2m GRP for Sewerage Network Zone 2 |  | 2026-10-27 → 2026-11-04 (+8d) |  | 111.53d → 109.48d |
| MOD-SWN-MH-175 | 2000mm GRP Manholes (Standard & Backdrop) 2m GRP for Sewerage Network Zone 2 |  | 2026-11-03 → 2026-11-10 (+7d) |  | 105.42d → 103.37d |
| MOD-SWN-PW-1565 | Backfilling 2m GRP for Sewerage Network Zone 2 | 2026-11-18 → 2026-10-29 A (-20d) | 2026-12-03 → 2026-12-05 (+2d) | 0% → 37% | 105.42d → 103.37d |
| MOD-SWN-PW-1595 | Test 2m GRP for Sewerage Network Zone 2 | 2026-11-03 → 2026-11-10 (+7d) | 2026-11-18 → 2026-11-25 (+7d) |  | 105.42d → 103.37d |
| 6 | **Rainwater Drainage Network Zone 2** |  | 2026-12-01 → 2026-12-08 (+7d) |  |  |
| 1 | **Pipe Laying Works** |  | 2026-10-28 → 2026-11-04 (+7d) |  |  |

| ID | Task | Start | Finish | Complete | Total float |
| --- | --- | --- | --- | --- | --- |
| 2 | **Supply & Installation of uPVC Pipes (250–300mm dia)** |  | 2026-10-25 → 2026-11-02 (+8d) |  |  |
| MOD-RWN-PL-753 | Laying of uPVC pipe UPVC for Rainwater Drainage Network Zone 2 |  | 2026-10-24 → 2026-10-31 (+7d) |  | -93.3d → -100.9d |
| MOD-RWN-PL-763 | Coating / Wrapping UPVC for Rainwater Drainage Network Zone 2 |  | 2026-10-24 → 2026-11-01 (+8d) |  | -89.6d → -97.2d |
| MOD-RWN-PL-773 | Test (Pressure-slope) UPVC for Rainwater Drainage Network Zone 2 |  | 2026-10-24 → 2026-10-31 (+7d) |  | -93.3d → -100.9d |
| MOD-RWN-PL-783 | Backfilling & Warning Tape UPVC for Rainwater Drainage Network Zone 2 |  | 2026-10-25 → 2026-11-02 (+8d) |  | -90.84d → -98.44d |
| 4 | **uPVC Connection Pipes (150mm dia)** |  | 2026-10-28 → 2026-11-04 (+7d) |  |  |
| MOD-RWN-PL-853 | Lean Concrete / bedding material UPVC Con. for Rainwater Drainage Network Zone 2 |  | 2026-10-24 → 2026-10-31 (+7d) |  | -93.26d → -100.86d |
| MOD-RWN-PL-863 | Lay & connect UPVC Con. for Rainwater Drainage Network Zone 2 |  | 2026-10-24 → 2026-11-01 (+8d) |  | -93.3d → -100.9d |
| MOD-RWN-PL-873 | Test (Pressure-slope) UPVC Con. for Rainwater Drainage Network Zone 2 |  | 2026-10-24 → 2026-11-01 (+8d) |  | -93.3d → -100.9d |
| MOD-RWN-PL-883 | Backfilling & compaction UPVC Con. for Rainwater Drainage Network Zone 2 |  | 2026-10-28 → 2026-11-04 (+7d) |  | -93.3d → -100.9d |
| MOD-RWN-PL-903 | Coating / Wrapping UPVC Con. for Rainwater Drainage Network Zone 2 |  | 2026-10-28 → 2026-11-04 (+7d) |  | -93.3d → -100.9d |
| 5 | **Precast Concrete Box Culverts** |  | 2026-11-30 → 2026-12-08 (+8d) |  |  |
| 1 | **Box Culverts (500x500mm to 3500x800mm)** |  | 2026-11-30 → 2026-12-08 (+8d) |  |  |
| MOD-RWN-PC-34 | Excavation to required depth Box culvert for Rainwater Drainage Network Zone 2 |  | 2026-10-25 → 2026-11-02 (+8d) |  | -108.31d → -114.59d |
| MOD-RWN-PC-44 | Dewatering and trench shoring Box culvert for Rainwater Drainage Network Zone 2 |  | 2026-10-27 → 2026-11-04 (+8d) |  | -108.31d → -114.59d |
| MOD-RWN-PC-54 | Bedding preparation (gravel/lean concrete) Box culvert for Rainwater Drainage Network Zone 2 |  | 2026-10-31 → 2026-11-08 (+8d) |  | -108.31d → -114.59d |
| MOD-RWN-PC-64 | Installation of box culvert units Box culvert for Rainwater Drainage Network Zone 2 | 2026-10-31 → 2026-11-08 (+8d) | 2026-11-05 → 2026-11-14 (+9d) |  | -108.31d → -114.59d |
| MOD-RWN-PC-74 | Alignment and joint sealing Box culvert for Rainwater Drainage Network Zone 2 | 2026-11-05 → 2026-11-14 (+9d) | 2026-11-10 → 2026-11-18 (+8d) |  | -107.61d → -114.21d |
| MOD-RWN-PC-84 | Construct headwalls/wing walls (if needed) Box culvert for Rainwater Drainage Network Zone 2 | 2026-11-10 → 2026-11-18 (+8d) | 2026-11-18 → 2026-11-26 (+8d) |  | -107.61d → -114.21d |
| MOD-RWN-PC-94 | Backfilling and compaction Box culvert for Rainwater Drainage Network Zone 2 | 2026-11-18 → 2026-11-26 (+8d) | 2026-11-25 → 2026-12-03 (+8d) |  | -107.61d → -114.21d |
| MOD-RWN-PC-104 | Surface finishing Box culvert for Rainwater Drainage Network Zone 2 | 2026-11-26 → 2026-12-05 (+9d) | 2026-11-30 → 2026-12-08 (+8d) |  | -107.61d → -114.21d |
| 2 | **Tube Culverts at Road Intersections** |  | 2026-10-31 → 2026-11-08 (+8d) |  |  |
| MOD-RWN-PC-124 | Trench excavation under road Tube culvert for Rainwater Drainage Network Zone 2 |  | 2026-10-31 → 2026-11-08 (+8d) |  | -81.51d → -88.11d |
| 3 | **Box Culverts at Road Intersections** |  | 2026-11-24 → 2026-12-02 (+8d) |  |  |
| MOD-RWN-PC-184 | Place bedding material for Rainwater Drainage Network Zone 2 |  | 2026-10-25 → 2026-11-02 (+8d) |  | -102.96d → -109.56d |
| MOD-RWN-PC-194 | Install precast box culvert for Rainwater Drainage Network Zone 2 | 2026-10-26 → 2026-11-02 (+7d) | 2026-10-29 → 2026-11-07 (+9d) |  | -102.96d → -109.56d |
| MOD-RWN-PC-204 | Construct connection chambers (if needed) for Rainwater Drainage Network Zone 2 | 2026-10-31 → 2026-11-07 (+7d) | 2026-10-31 → 2026-11-08 (+8d) |  | -102.96d → -109.56d |
| MOD-RWN-PC-214 | Joint treatment and testing for Rainwater Drainage Network Zone 2 | 2026-11-01 → 2026-11-08 (+7d) | 2026-11-14 → 2026-11-22 (+8d) |  | -102.96d → -109.56d |
| MOD-RWN-PC-224 | Backfilling and surface reinstatement for Rainwater Drainage Network Zone 2 | 2026-11-15 → 2026-11-23 (+8d) | 2026-11-24 → 2026-12-02 (+8d) |  | -102.96d → -109.56d |
| 4 | **Manholes** |  | 2026-12-01 → 2026-12-08 (+7d) |  |  |
| 1 | **Circular GRP Manholes (1200–1800mm dia)** |  | 2026-11-12 → 2026-11-21 (+9d) |  |  |
| MOD-RWN-MH-34 | Dewatering and safety barriers Circular Manhole for Rainwater Drainage Network Zone 2 |  | 2026-11-01 → 2026-11-09 (+8d) |  | -92.66d → -99.26d |
| MOD-RWN-MH-44 | Concrete base construction Circular Manhole for Rainwater Drainage Network Zone 2 |  | 2026-11-02 → 2026-11-10 (+8d) |  | -92.66d → -99.26d |
| MOD-RWN-MH-54 | Install GRP manhole shaft sections Circular Manhole for Rainwater Drainage Network Zone 2 |  | 2026-11-04 → 2026-11-12 (+8d) |  | -92.66d → -99.26d |
| MOD-RWN-MH-64 | Place slab and cover frame Circular Manhole for Rainwater Drainage Network Zone 2 |  | 2026-11-07 → 2026-11-15 (+8d) |  | -92.66d → -99.26d |
| MOD-RWN-MH-74 | Waterproofing Circular Manhole for Rainwater Drainage Network Zone 2 | 2026-11-07 → 2026-11-15 (+8d) | 2026-11-09 → 2026-11-17 (+8d) |  | -92.66d → -99.26d |
| MOD-RWN-MH-84 | Backfilling and compaction Circular Manhole for Rainwater Drainage Network Zone 2 | 2026-11-10 → 2026-11-18 (+8d) | 2026-11-12 → 2026-11-21 (+9d) |  | -92.66d → -99.26d |
| 3 | **Concrete Manholes for 1500x1500 Box Pipes** |  | 2026-11-15 → 2026-11-23 (+8d) |  |  |
| MOD-RWN-MH-174 | Base slab and wall shuttering Concrete Manhole 1.5x1.5 for Rainwater Drainage Network Zone 2 |  | 2026-11-01 → 2026-11-09 (+8d) |  | -94.66d → -101.26d |
| MOD-RWN-MH-184 | Wall reinforcement and casting Concrete Manhole 1.5x1.5 for Rainwater Drainage Network Zone 2 |  | 2026-11-04 → 2026-11-11 (+7d) |  | -94.66d → -101.26d |
| MOD-RWN-MH-194 | Roof slab with openings Concrete Manhole 1.5x1.5 for Rainwater Drainage Network Zone 2 |  | 2026-11-07 → 2026-11-15 (+8d) |  | -94.66d → -101.26d |
| MOD-RWN-MH-204 | Masonry/benching works inside Concrete Manhole 1.5x1.5 for Rainwater Drainage Network Zone 2 | 2026-11-07 → 2026-11-15 (+8d) | 2026-11-09 → 2026-11-17 (+8d) |  | -94.66d → -101.26d |
| MOD-RWN-MH-214 | Install cover and frame Concrete Manhole 1.5x1.5 for Rainwater Drainage Network Zone 2 | 2026-11-09 → 2026-11-17 (+8d) | 2026-11-11 → 2026-11-19 (+8d) |  | -94.66d → -101.26d |
| MOD-RWN-MH-224 | Backfill in layers Concrete Manhole 1.5x1.5 for Rainwater Drainage Network Zone 2 | 2026-11-11 → 2026-11-19 (+8d) | 2026-11-15 → 2026-11-23 (+8d) |  | -94.66d → -101.26d |
| 2 | **Concrete Manholes for 1000x1000 Box Pipes** |  | 2026-12-01 → 2026-12-08 (+7d) |  |  |
| MOD-RWN-MH-94 | Excavation Concrete Manhole 1x1 for Rainwater Drainage Network Zone 2 |  | 2026-11-02 → 2026-11-09 (+7d) | 60% → 68% | -108.31d → -114.59d |
| MOD-RWN-MH-104 | Base slab and wall shuttering Concrete Manhole 1x1 for Rainwater Drainage Network Zone 2 | 2026-11-02 → 2026-11-09 (+7d) | 2026-11-04 → 2026-11-11 (+7d) |  | -108.31d → -114.59d |
| MOD-RWN-MH-114 | Wall reinforcement and casting Concrete Manhole 1x1 for Rainwater Drainage Network Zone 2 | 2026-11-04 → 2026-11-11 (+7d) | 2026-11-10 → 2026-11-17 (+7d) |  | -108.31d → -114.59d |
| MOD-RWN-MH-124 | Roof slab with openings Concrete Manhole 1x1 for Rainwater Drainage Network Zone 2 | 2026-11-10 → 2026-11-17 (+7d) | 2026-11-17 → 2026-11-24 (+7d) |  | -108.31d → -114.59d |
| MOD-RWN-MH-134 | Masonry/benching works inside Concrete Manhole 1x1 for Rainwater Drainage Network Zone 2 | 2026-11-17 → 2026-11-24 (+7d) | 2026-11-23 → 2026-11-30 (+7d) |  | -108.31d → -114.59d |
| MOD-RWN-MH-144 | Install cover and frame Concrete Manhole 1x1 for Rainwater Drainage Network Zone 2 | 2026-11-23 → 2026-11-30 (+7d) | 2026-11-28 → 2026-12-05 (+7d) |  | -108.31d → -114.59d |
| MOD-RWN-MH-154 | Backfill in layers Concrete Manhole 1x1 for Rainwater Drainage Network Zone 2 | 2026-11-28 → 2026-12-05 (+7d) | 2026-12-01 → 2026-12-08 (+7d) |  | -108.31d → -114.59d |
| 3 | **Gully Outfalls to Swales** |  | 2026-11-15 → 2026-11-22 (+7d) |  |  |
| 1 | **Gully Outfalls to Swales** |  | 2026-11-04 → 2026-11-12 (+8d) |  |  |
| MOD-RWN-GO-21 | Excavate outfall channel Gully Outfall to Swales for Rainwater Drainage Network Zone 2 |  | 2026-10-31 → 2026-11-08 (+8d) |  | -85.61d → -92.21d |
| MOD-RWN-GO-31 | Place concrete apron or pipes Gully Outfall to Swales for Rainwater Drainage Network Zone 2 |  | 2026-11-01 → 2026-11-08 (+7d) |  | -85.61d → -92.21d |
| MOD-RWN-GO-41 | Provide slope protection (riprap) Gully Outfall to Swales for Rainwater Drainage Network Zone 2 |  | 2026-11-01 → 2026-11-09 (+8d) |  | -85.61d → -92.21d |
| MOD-RWN-GO-51 | Compact and shape terrain Gully Outfall to Swales for Rainwater Drainage Network Zone 2 | 2026-11-02 → 2026-11-10 (+8d) | 2026-11-04 → 2026-11-12 (+8d) |  | -85.61d → -92.21d |
| 2 | **Riprap Works & Protection** |  | 2026-11-15 → 2026-11-22 (+7d) |  |  |
| MOD-RWN-GO-61 | Lay filter fabric/membrane for Rainwater Drainage Network Zone 2 |  | 2026-11-01 → 2026-11-09 (+8d) |  | -94.41d → -101.01d |
| MOD-RWN-GO-71 | Place riprap/stone layer for Rainwater Drainage Network Zone 2 |  | 2026-11-05 → 2026-11-12 (+7d) |  | -94.41d → -101.01d |
| MOD-RWN-GO-81 | Compact edges for Rainwater Drainage Network Zone 2 | 2026-11-05 → 2026-11-12 (+7d) | 2026-11-11 → 2026-11-18 (+7d) |  | -94.41d → -101.01d |
| MOD-RWN-GO-91 | Ensure hydraulic flow direction for Rainwater Drainage Network Zone 2 | 2026-11-11 → 2026-11-18 (+7d) | 2026-11-15 → 2026-11-22 (+7d) |  | -94.41d → -101.01d |
| 6 | **Backfilling & Bedding** |  | 2026-11-02 → 2026-11-10 (+8d) |  |  |
| 2 | **Gravel Bedding & Filter Cloth for uPVC Drain Pipes** |  | 2026-11-02 → 2026-11-10 (+8d) |  |  |
| MOD-RWN-BB-102 | Final fill and trench restoration for Rainwater Drainage Network Zone 2 |  | 2026-11-02 → 2026-11-10 (+8d) |  | -83.75d → -90.35d |
| MOD-RWN-BB-62 | Line trench with filter cloth for Rainwater Drainage Network Zone 2 |  | 2026-10-26 → 2026-11-02 (+7d) |  | -83.75d → -90.35d |
| MOD-RWN-BB-72 | Place and compact gravel bedding for Rainwater Drainage Network Zone 2 |  | 2026-10-26 → 2026-11-03 (+8d) |  | -83.75d → -90.35d |
| MOD-RWN-BB-82 | Lay pipe within gravel zone for Rainwater Drainage Network Zone 2 |  | 2026-10-28 → 2026-11-05 (+8d) |  | -83.75d → -90.35d |
| MOD-RWN-BB-92 | Wrap filter cloth above pipe for Rainwater Drainage Network Zone 2 |  | 2026-10-31 → 2026-11-07 (+7d) |  | -83.75d → -90.35d |

| ID | Task | Start | Finish | Complete | Total float |
| --- | --- | --- | --- | --- | --- |
| 1 | **Potable Water Network Zone 2** |  | 2026-12-09 → 2026-12-16 (+7d) |  |  |
| 1 | **Pipe Installation Works** |  | 2026-10-25 → 2026-11-01 (+7d) |  |  |
| MOD-PWN-PI-153 | Lean Concrete / Pipe Bedding Preparation for Potable Water Network Zone 2 |  | 2026-10-24 → 2026-10-31 (+7d) |  | 67d → 59.4d |
| MOD-PWN-PI-163 | HDPE Pipe Laying (200 mm to 710 mm) for Potable Water Network Zone 2 |  | 2026-10-24 → 2026-11-01 (+8d) |  | 67d → 59.4d |
| MOD-PWN-PI-173 | Test (Pressure-slope) for Potable Water Network Zone 2 |  | 2026-10-24 → 2026-11-01 (+8d) |  | 67d → 59.4d |
| MOD-PWN-PI-203 | Coating / Wrapping for Potable Water Network Zone 2 |  | 2026-10-25 → 2026-11-01 (+7d) |  | 67d → 59.4d |
| MOD-PWN-PI-213 | Backfilling & Warrning Tape for Potable Water Network Zone 2 |  | 2026-10-25 → 2026-11-01 (+7d) |  | 67d → 59.4d |
| 2 | **Valve Installation & Chambers** |  | 2026-10-29 → 2026-11-07 (+9d) |  |  |
| MOD-PWN-VC-37 | Valve Chamber Excavation for Potable Water Network Zone 2 |  | 2026-10-24 → 2026-10-31 (+7d) |  | 38.56d → 31.96d |
| MOD-PWN-VC-47 | RC Slab, Walls, or Precast Chambers for Potable Water Network Zone 2 |  | 2026-10-24 → 2026-11-01 (+8d) |  | 53.81d → 47.21d |
| MOD-PWN-VC-7 | Gate Valves (225–710 mm) for Potable Water Network Zone 2 |  | 2026-10-24 → 2026-11-01 (+8d) |  | 54.2d → 47.72d |
| MOD-PWN-VC-17 | Butterfly Valves (355, 500, 630 mm) for Potable Water Network Zone 2 |  | 2026-10-24 → 2026-11-01 (+8d) |  | 54.2d → 47.72d |
| MOD-PWN-VC-27 | 3-exit (2 x 2.5-inch and 1 x 4-inch) dry vacuum cylinder detachable fire nozzle for Potable Water Network Zone 2 |  | 2026-10-24 → 2026-11-01 (+8d) | 95% → 96% | 54.2d → 47.72d |
| MOD-PWN-VC-57 | Fixing Covers, Gratings, Frames for Potable Water Network Zone 2 |  | 2026-10-25 → 2026-11-02 (+8d) |  | 53.81d → 47.21d |
| MOD-PWN-VC-67 | Tagging & Painting for Potable Water Network Zone 2 | 2026-10-25 → 2026-11-02 (+8d) | 2026-10-29 → 2026-11-07 (+9d) |  | 53.81d → 47.21d |
| 3 | **Flow Meter Installation** |  | 2026-12-09 → 2026-12-16 (+7d) |  |  |
| MOD-PWN-FM-5 | Chamber Excavation (280 mm, 300 mm, 500 mm, 800 mm) for Potable Water Network Zone 2 |  | 2026-10-25 → 2026-11-01 (+7d) |  | 38.56d → 31.96d |
| MOD-PWN-FM-15 | RC or Precast Chamber Construction for Potable Water Network Zone 2 |  | 2026-10-27 → 2026-11-04 (+8d) |  | 38.56d → 31.96d |
| MOD-PWN-FM-25 | Flowmeter Installation & Pipe Integration for Potable Water Network Zone 2 |  | 2026-11-26 → 2026-12-03 (+7d) |  | 19.15d → 12.55d |
| MOD-PWN-FM-35 | Wiring/Cabling if applicable for Potable Water Network Zone 2 | 2026-11-26 → 2026-12-03 (+7d) | 2026-12-06 → 2026-12-13 (+7d) |  | 19.15d → 12.55d |
| MOD-PWN-FM-45 | Calibration & Commissioning for Potable Water Network Zone 2 | 2026-12-06 → 2026-12-13 (+7d) | 2026-12-09 → 2026-12-16 (+7d) |  | 19.15d → 12.55d |
| 4 | **Washout & Air Valve Chambers** |  | 2026-10-31 → 2026-11-05 (+5d) |  |  |
| MOD-PWN-WA-27 | Pipe Work for Potable Water Network Zone 2 |  | 2026-10-25 → 2026-11-01 (+7d) | 90% → 91% | 53d → 47.5d |
| MOD-PWN-WA-37 | Washout (Valve + Outlet) Installation for Potable Water Network Zone 2 |  | 2026-10-26 → 2026-11-02 (+7d) | 88% → 93% | 53d → 47.5d |
| MOD-PWN-WA-47 | Air Valve Rooms (Valve + Outlet) Installation for Potable Water Network Zone 2 |  | 2026-10-27 → 2026-11-03 (+7d) | 80% → 86% | 53d → 47.5d |
| MOD-PWN-WA-57 | Covers, Ladders & Tags for Potable Water Network Zone 2 |  | 2026-10-28 → 2026-11-03 (+6d) | 80% → 84% | 53d → 47.5d |
| MOD-PWN-WA-67 | Backfilling & Final Finishing for Potable Water Network Zone 2 | 2026-10-28 → 2026-11-03 (+6d) | 2026-10-31 → 2026-11-05 (+5d) |  | 53d → 47.5d |
| 2 | **Irrigation Network Zone 2** |  | 2026-11-26 → 2026-12-03 (+7d) |  |  |
| 1 | **Excavation, Pipe Laying & Backfilling** |  | 2026-10-26 → 2026-11-02 (+7d) |  |  |
| MOD-IRN-EB-340 | Lean Concrete / Pipe Bedding with Type B Material for Irrigation Network Zone 2 |  | 2026-10-24 → 2026-10-31 (+7d) |  | 66.2d → 58.6d |
| MOD-IRN-EB-350 | HDPE Pipe Laying (125 mm to 630 mm) for Irrigation Network Zone 2 |  | 2026-10-24 → 2026-11-01 (+8d) |  | 66.2d → 58.6d |
| MOD-IRN-EB-360 | Test (Pressure-slope) for Irrigation Network Zone 2 |  | 2026-10-25 → 2026-11-01 (+7d) |  | 66.2d → 58.6d |
| MOD-IRN-EB-370 | Coating / Wrapping for Irrigation Network Zone 2 |  | 2026-10-25 → 2026-11-01 (+7d) |  | 66.2d → 58.6d |
| MOD-IRN-EB-380 | Backfilling & Warrning Tape for Irrigation Network Zone 2 |  | 2026-10-26 → 2026-11-02 (+7d) |  | 66.2d → 58.6d |
| 2 | **Valves and Appurtenances** |  | 2026-10-26 → 2026-11-03 (+8d) |  |  |
| MOD-IRN-VA-5 | Supply & Installation of Valves (Gate Valve) for Irrigation Network Zone 2 |  | 2026-10-24 → 2026-11-01 (+8d) |  | 52.2d → 45.6d |
| MOD-IRN-VA-15 | Supply & Installation of Valves (Butterfly Valve) for Irrigation Network Zone 2 |  | 2026-10-24 → 2026-11-01 (+8d) |  | 52.2d → 45.6d |
| MOD-IRN-VA-25 | Installation of Flanges, Bolts, Collars, Nuts for Irrigation Network Zone 2 |  | 2026-10-25 → 2026-11-01 (+7d) |  | 52.2d → 45.6d |
| MOD-IRN-VA-35 | Valve Pressure Testing for Irrigation Network Zone 2 |  | 2026-10-26 → 2026-11-02 (+7d) | 60% → 70% | 56.4d → 50.1d |
| MOD-IRN-VA-45 | Support Brackets/Anchor Blocks for Irrigation Network Zone 2 |  | 2026-10-26 → 2026-11-03 (+8d) | 60% → 65% | 56.4d → 50.1d |
| 3 | **Valve Rooms** |  | 2026-10-25 → 2026-11-01 (+7d) |  |  |
| MOD-IRN-VR-67 | Backfilling and Finishing Valve Chamber for Irrigation Network Zone 2 |  | 2026-10-25 → 2026-11-01 (+7d) |  | 58d → 51.4d |
| 4 | **Washout Chambers** |  | 2026-10-25 → 2026-11-01 (+7d) |  |  |
| MOD-IRN-WC-46 | Manhole Frame, Cover & Ladder Fixing Washout Chamber for Irrigation Network Zone 2 |  | 2026-10-24 → 2026-11-01 (+8d) |  | 58.35d → 51.75d |
| MOD-IRN-WC-56 | Backfilling & Reinstatement Washout Chamber for Irrigation Network Zone 2 |  | 2026-10-25 → 2026-11-01 (+7d) |  | 58.35d → 51.75d |
| 6 | **Flow Meter Chambers** |  | 2026-11-26 → 2026-12-03 (+7d) |  |  |
| MOD-IRN-FC-16 | RCC Base & Wall Construction Flow Meter Chamber for Irrigation Network Zone 2 |  | 2026-10-25 → 2026-11-01 (+7d) |  | 52.2d → 45.6d |
| MOD-IRN-FC-26 | Flow Meter Installation (280, 300, 500 mm) Flow Meter Chamber for Irrigation Network Zone 2 |  | 2026-11-19 → 2026-11-28 (+9d) |  | 30.25d → 23.65d |
| MOD-IRN-FC-36 | Integration with Pipework Flow Meter Chamber for Irrigation Network Zone 2 |  | 2026-11-21 → 2026-11-28 (+7d) |  | 30.25d → 23.65d |
| MOD-IRN-FC-46 | Testing & Calibration Flow Meter Chamber for Irrigation Network Zone 2 |  | 2026-11-23 → 2026-11-30 (+7d) |  | 30.25d → 23.65d |
| MOD-IRN-FC-56 | Cover and Access Arrangement Flow Meter Chamber for Irrigation Network Zone 2 | 2026-11-23 → 2026-11-30 (+7d) | 2026-11-26 → 2026-12-03 (+7d) |  | 30.25d → 23.65d |
| 1 | **Sewerage Network Zone 1** |  | 2027-04-04 → 2027-04-11 (+7d) |  |  |
| 1 | **Pipework: Supply, Installation, and Testing** |  | 2026-10-31 → 2026-11-05 (+5d) |  |  |
| 3 | **HDPE Pressure Pipes Installation (250mm–630mm)** |  | 2026-10-31 → 2026-11-05 (+5d) |  |  |
| MOD-SWN-PW-765 | Excavation and Trenching HDPE for Sewerage Network Zone 1 |  | 2026-10-24 → 2026-10-31 A (+7d) | 98% → 100% | 94.1d → none |
| MOD-SWN-PW-645 | HDPE Pressure Pipes Installation (250mm–630mm) HDPE for Sewerage Network Zone 1 |  | 2026-10-26 → 2026-10-31 A (+5d) | 97% → 100% | 94.1d → none |
| MOD-SWN-PW-795 | Coating / Wrapping HDPE for Sewerage Network Zone 1 |  | 2026-10-27 → 2026-10-31 A (+4d) | 95% → 100% | 138.35d → none |
| MOD-SWN-PW-775 | Lean Concrete / Bedding HDPE for Sewerage Network Zone 1 |  | 2026-10-25 → 2026-11-01 (+7d) |  | 94.1d → 87.55d |
| MOD-SWN-PW-785 | Test (Pressure - Slope) HDPE for Sewerage Network Zone 1 |  | 2026-10-26 → 2026-11-02 (+7d) |  | 138.35d → 133d |
| MOD-SWN-PW-755 | Backfilling & Warrning Tape HDPE for Sewerage Network Zone 1 |  | 2026-10-31 → 2026-11-05 (+5d) | 75% → 78% | 138.35d → 133d |
| 2 | **Fittings and Valves** | 2026-10-26 → 2026-11-01 (+6d) | 2026-11-26 → 2026-12-02 (+6d) |  |  |
| MOD-SWN-FV-001 | Supply & Installation of HDPE Elbows for Sewerage Network Zone 1 | 2026-10-26 → 2026-11-01 (+6d) | 2026-11-02 → 2026-11-08 (+6d) |  | 81.1d → 75.65d |
| MOD-SWN-FV-002 | Gate Valves Installation for Sewerage Network Zone 1 | 2026-11-02 → 2026-11-08 (+6d) | 2026-11-07 → 2026-11-12 (+5d) |  | 81.1d → 75.65d |
| MOD-SWN-FV-003 | Drain Valves Installation for Sewerage Network Zone 1 | 2026-11-07 → 2026-11-12 (+5d) | 2026-11-11 → 2026-11-17 (+6d) |  | 81.1d → 75.65d |
| MOD-SWN-FV-004 | Air Breather & Air Release Valves Installation for Sewerage Network Zone 1 | 2026-11-11 → 2026-11-17 (+6d) | 2026-11-23 → 2026-11-29 (+6d) |  | 81.1d → 75.65d |
| MOD-SWN-FV-005 | Jointing & Piping Accessories Installation for Sewerage Network Zone 1 | 2026-11-23 → 2026-11-29 (+6d) | 2026-11-26 → 2026-12-02 (+6d) |  | 81.1d → 75.65d |
| 3 | **Valve & Flow Meter Chambers** |  | 2027-01-05 → 2027-01-10 (+5d) |  |  |
| 1 | **Valve Chambers Construction** |  | 2026-12-17 → 2026-12-25 (+8d) |  |  |
| MOD-SWN-PW-1135 | Excavation Valve Chamber for Sewerage Network Zone 1 |  | 2026-11-02 → 2026-11-10 (+8d) |  | 72.1d → 66.75d |
| MOD-SWN-PW-1145 | Lean Concrete / Bedding Valve Chamber for Sewerage Network Zone 1 |  | 2026-11-13 → 2026-11-21 (+8d) |  | 72.1d → 66.75d |

| ID | Task | Start | Finish | Complete | Total float |
| --- | --- | --- | --- | --- | --- |
| MOD-SWN-VF-164 | Valve Chambers Construction Valve Chamber for Sewerage Network Zone 1 |  | 2026-11-17 → 2026-11-25 (+8d) |  | 72.1d → 66.75d |
| MOD-SWN-PW-1155 | Test Valve Chamber for Sewerage Network Zone 1 | 2026-11-17 → 2026-11-25 (+8d) | 2026-12-02 → 2026-12-10 (+8d) |  | 90.8d → 83.2d |
| MOD-SWN-PW-1125 | Backfilling Valve Chamber for Sewerage Network Zone 1 | 2026-12-02 → 2026-12-10 (+8d) | 2026-12-17 → 2026-12-25 (+8d) |  | 90.8d → 83.2d |
| 2 | **Water Drain Chambers Construction** |  | 2026-12-16 → 2026-12-23 (+7d) |  |  |
| MOD-SWN-PW-1175 | Excavation Water Drain Chamber for Sewerage Network Zone 1 |  | 2026-10-30 → 2026-11-05 (+6d) | 70% → 75% | 82.3d → 80.1d |
| MOD-SWN-PW-1185 | Lean Concrete / Bedding Water Drain Chamber for Sewerage Network Zone 1 |  | 2026-11-07 → 2026-11-12 (+5d) | 60% → 70% | 82.3d → 80.1d |
| MOD-SWN-VF-174 | Water Drain Chambers Construction Water Drain Chamber for Sewerage Network Zone 1 |  | 2026-11-25 → 2026-12-02 (+7d) | 60% → 65% | 72.1d → 66.75d |
| MOD-SWN-PW-1195 | Test Water Drain Chamber for Sewerage Network Zone 1 |  | 2026-12-01 → 2026-12-08 (+7d) |  | 92.2d → 85.55d |
| MOD-SWN-PW-1165 | Backfilling Water Drain Chamber for Sewerage Network Zone 1 | 2026-12-01 → 2026-12-08 (+7d) | 2026-12-16 → 2026-12-23 (+7d) |  | 92.2d → 85.55d |
| 3 | **Discharge Chambers Construction** |  | 2027-01-03 → 2027-01-08 (+5d) |  |  |
| MOD-SWN-PW-1215 | Excavation Discharge Chamber for Sewerage Network Zone 1 |  | 2026-11-03 → 2026-11-06 (+3d) | 50% → 70% |  |
| MOD-SWN-PW-1225 | Lean Concrete / Bedding Discharge Chamber for Sewerage Network Zone 1 |  | 2026-11-16 → 2026-11-17 (+1d) | 40% → 50% |  |
| MOD-SWN-VF-184 | Discharge Chambers Construction Discharge Chamber for Sewerage Network Zone 1 |  | 2026-12-04 → 2026-12-09 (+5d) | 30% → 40% | 72.1d → 66.75d |
| MOD-SWN-PW-1235 | Test Discharge Chamber for Sewerage Network Zone 1 | 2026-12-04 → 2026-12-09 (+5d) | 2026-12-19 → 2026-12-24 (+5d) |  | 74.1d → 68.75d |
| MOD-SWN-PW-1205 | Backfilling Discharge Chamber for Sewerage Network Zone 1 | 2026-12-19 → 2026-12-24 (+5d) | 2027-01-03 → 2027-01-08 (+5d) |  | 74.1d → 68.75d |
| 4 | **Flow Meter Chambers Construction** |  | 2027-01-05 → 2027-01-10 (+5d) |  |  |
| MOD-SWN-PW-1255 | Excavation Flow Meter Chamber for Sewerage Network Zone 1 |  | 2026-10-31 → 2026-11-08 (+8d) |  | 97.53d → 89.93d |
| MOD-SWN-PW-1265 | Lean Concrete / Bedding Flow Meter Chamber for Sewerage Network Zone 1 |  | 2026-11-09 → 2026-11-16 (+7d) |  | 97.53d → 89.93d |
| MOD-SWN-VF-194 | Flow Meter Chambers Construction Flow Meter Chamber for Sewerage Network Zone 1 |  | 2026-12-06 → 2026-12-11 (+5d) |  | 72.1d → 66.75d |
| MOD-SWN-PW-1275 | Test Flow Meter Chamber for Sewerage Network Zone 1 | 2026-12-06 → 2026-12-11 (+5d) | 2026-12-21 → 2026-12-26 (+5d) |  | 72.1d → 66.75d |
| MOD-SWN-PW-1245 | Backfilling Flow Meter Chamber for Sewerage Network Zone 1 | 2026-12-21 → 2026-12-26 (+5d) | 2027-01-05 → 2027-01-10 (+5d) |  | 72.1d → 66.75d |
| 4 | **Manholes** |  | 2026-11-14 → 2026-11-21 (+7d) |  |  |
| 1 | **1200mm GRP Manholes with Backdrop** |  | 2026-11-14 → 2026-11-21 (+7d) |  |  |
| MOD-SWN-PW-1295 | Excavation 1.2m GRP for Sewerage Network Zone 1 |  | 2026-10-24 → 2026-11-01 (+8d) |  | 123.82d → 116.97d |
| MOD-SWN-PW-1305 | Lean Concrete / Bedding 1.2m GRP for Sewerage Network Zone 1 |  | 2026-10-24 → 2026-11-01 (+8d) |  | 123.82d → 116.97d |
| MOD-SWN-MH-105 | 1200mm GRP Manholes with Backdrop 1.2m GRP for Sewerage Network Zone 1 |  | 2026-10-25 → 2026-11-02 (+8d) |  | 123.82d → 116.97d |
| MOD-SWN-PW-1285 | Backfilling 1.2m GRP for Sewerage Network Zone 1 | 2026-10-30 A | 2026-11-14 → 2026-11-21 (+7d) | 0% → 5% | 123.82d → 116.97d |
| MOD-SWN-PW-1315 | Test 1.2m GRP for Sewerage Network Zone 1 | 2026-10-25 → 2026-11-02 (+8d) | 2026-10-30 → 2026-11-07 (+8d) |  | 123.82d → 116.97d |
| 2 | **1500mm GRP Manholes (Standard & Backdrop)** |  | 2026-11-14 → 2026-11-21 (+7d) |  |  |
| MOD-SWN-PW-1335 | Excavation 1.5m GRP for Sewerage Network Zone 1 |  | 2026-10-24 → 2026-11-01 (+8d) |  | 123.82d → 116.97d |
| MOD-SWN-PW-1345 | Lean Concrete / Bedding 1.5m GRP for Sewerage Network Zone 1 |  | 2026-10-24 → 2026-11-01 (+8d) |  | 123.82d → 116.97d |
| MOD-SWN-MH-115 | 1500mm GRP Manholes (Standard & Backdrop) 1.5m GRP for Sewerage Network Zone 1 |  | 2026-10-25 → 2026-11-02 (+8d) |  | 123.82d → 116.97d |
| MOD-SWN-PW-1325 | Backfilling 1.5m GRP for Sewerage Network Zone 1 | 2026-10-30 A | 2026-11-14 → 2026-11-21 (+7d) | 0% → 5% | 123.82d → 116.97d |
| MOD-SWN-PW-1355 | Test 1.5m GRP for Sewerage Network Zone 1 | 2026-10-25 → 2026-11-02 (+8d) | 2026-10-30 → 2026-11-07 (+8d) |  | 123.82d → 116.97d |
| 3 | **1800mm GRP Manholes (Standard & Backdrop)** |  | 2026-11-14 → 2026-11-21 (+7d) |  |  |
| MOD-SWN-PW-1375 | Excavation 1.8m GRP for Sewerage Network Zone 1 |  | 2026-10-24 → 2026-11-01 (+8d) |  | 123.82d → 116.97d |
| MOD-SWN-PW-1385 | Lean Concrete / Bedding 1.8m GRP for Sewerage Network Zone 1 |  | 2026-10-24 → 2026-11-01 (+8d) |  | 123.82d → 116.97d |
| MOD-SWN-MH-125 | 1800mm GRP Manholes (Standard & Backdrop) 1.8m GRP for Sewerage Network Zone 1 |  | 2026-10-25 → 2026-11-02 (+8d) |  | 123.82d → 116.97d |
| MOD-SWN-PW-1365 | Backfilling 1.8m GRP for Sewerage Network Zone 1 | 2026-10-30 A | 2026-11-14 → 2026-11-21 (+7d) | 0% → 5% | 124.02d → 117.17d |
| MOD-SWN-PW-1395 | Test 1.8m GRP for Sewerage Network Zone 1 | 2026-10-25 → 2026-11-02 (+8d) | 2026-10-30 → 2026-11-07 (+8d) |  | 124.02d → 117.17d |
| 4 | **2000mm GRP Manholes (Standard & Backdrop)** |  | 2026-11-14 → 2026-11-21 (+7d) |  |  |
| MOD-SWN-PW-1415 | Excavation 2m GRP for Sewerage Network Zone 1 |  | 2026-10-24 → 2026-11-01 (+8d) |  | 123.82d → 116.97d |
| MOD-SWN-PW-1425 | Lean Concrete / Bedding 2m GRP for Sewerage Network Zone 1 |  | 2026-10-24 → 2026-11-01 (+8d) |  | 123.82d → 116.97d |
| MOD-SWN-MH-135 | 2000mm GRP Manholes (Standard & Backdrop) 2m GRP for Sewerage Network Zone 1 |  | 2026-10-25 → 2026-11-02 (+8d) |  | 123.82d → 116.97d |
| MOD-SWN-PW-1405 | Backfilling 2m GRP for Sewerage Network Zone 1 | 2026-10-30 A | 2026-11-14 → 2026-11-21 (+7d) | 0% → 5% | 123.82d → 116.97d |
| MOD-SWN-PW-1435 | Test 2m GRP for Sewerage Network Zone 1 | 2026-10-25 → 2026-11-02 (+8d) | 2026-10-30 → 2026-11-07 (+8d) |  | 123.82d → 116.97d |
| 5 | **Pumping Stations** |  | 2027-04-04 → 2027-04-11 (+7d) |  |  |
| 9 | **Perimeter Walls & Gates** |  | 2026-10-28 → 2026-10-26 (-2d) |  |  |
| MOD-SWN-PS-049 | Main entrance gates – Each PS for Sewerage Network Zone 1 |  | 2026-10-28 → 2026-10-26 A (-2d) | 50% → 100% | 8.6d → none |
| MOD-SWN-PS-050 | Personal entrance gate – Each PS for Sewerage Network Zone 1 |  | 2026-10-25 A | 50% → 100% | 8.6d → none |
| 1 | **Sewage Pumps and MCC System** | 2026-11-19 → 2026-11-26 (+7d) | 2027-01-10 → 2027-01-17 (+7d) |  |  |
| MOD-SWN-PS-002 | Sewage pumps incl. MCC, control panel, flow meters, transducers, switches, GRP piping, testing & installation – PS1 for | 2026-11-19 → 2026-11-26 (+7d) | 2026-12-02 → 2026-12-09 (+7d) |  | 39.35d → 32.75d |
| MOD-SWN-PS-003 | Sewage pumps (2x86 l/s, 1x325 l/s) incl. MCC – PS1 for Sewerage Network Zone 1 | 2026-12-02 → 2026-12-09 (+7d) | 2026-12-16 → 2026-12-23 (+7d) |  | 39.35d → 32.75d |
| MOD-SWN-PS-004 | Sewage pumps (2x55 l/s) incl. MCC – PS2 for Sewerage Network Zone 1 | 2026-12-16 → 2026-12-23 (+7d) | 2027-01-10 → 2027-01-17 (+7d) |  | 39.35d → 32.75d |
| 2 | **Odor Control System** | 2026-12-21 → 2026-12-28 (+7d) | 2027-01-19 → 2027-01-26 (+7d) |  |  |
| MOD-SWN-PS-0081 | Odor control system – All stations (PS1) for Sewerage Network Zone 1 | 2026-12-21 → 2026-12-28 (+7d) | 2027-01-02 → 2027-01-09 (+7d) |  | -17.21d → -23.21d |
| MOD-SWN-PS-0082 | Odor control system – All stations (PS2) for Sewerage Network Zone 1 | 2027-01-02 → 2027-01-09 (+7d) | 2027-01-19 → 2027-01-26 (+7d) |  | 30.79d → 24.79d |
| 3 | **In-Line Booster Stations** | 2027-01-02 → 2027-01-09 (+7d) | 2027-04-04 → 2027-04-11 (+7d) |  |  |
| MOD-SWN-PS-010 | In-Line Booster Stations - Civil Works for Sewerage Network Zone 1 | 2027-01-02 → 2027-01-09 (+7d) | 2027-01-26 → 2027-02-02 (+7d) |  | -17.21d → -23.21d |
| MOD-SWN-PS-1164 | In-Line Booster Stations - Mechanical Works for Sewerage Network Zone 1 | 2027-01-26 → 2027-02-02 (+7d) | 2027-03-02 → 2027-03-17 (+15d) |  | -17.21d → -23.21d |
| MOD-SWN-PS-1174 | In-Line Booster Stations - Electrical Works for Sewerage Network Zone 1 | 2027-03-02 → 2027-03-17 (+15d) | 2027-04-04 → 2027-04-11 (+7d) |  | -17.21d → -23.21d |
| 7 | **Engine/Motor Control Center Buildings** | 2026-10-24 → 2026-10-31 (+7d) | 2026-11-01 → 2026-11-09 (+8d) |  |  |
| MOD-SWN-PS-038 | MCC Building – PS1 for Sewerage Network Zone 1 | 2026-10-24 → 2026-10-31 (+7d) | 2026-10-24 → 2026-11-01 (+8d) |  | 43.6d → 37d |
| MOD-SWN-PS-039 | MCC Building – PS2 for Sewerage Network Zone 1 | 2026-10-25 → 2026-11-01 (+7d) | 2026-11-01 → 2026-11-09 (+8d) |  | 67.6d → 61d |
| 4 | **Valves and Fittings (General Supply & Installation)** | 2026-11-19 → 2026-11-26 (+7d) | 2026-11-25 → 2026-12-02 (+7d) |  |  |
| MOD-SWN-PS-012 | Valves, fittings & accessories – PS1 for Sewerage Network Zone 1 | 2026-11-19 → 2026-11-26 (+7d) | 2026-11-22 → 2026-11-29 (+7d) |  | 78.35d → 71.75d |
| MOD-SWN-PS-013 | 35mm raked bar SS 316 mesh – PS1 for Sewerage Network Zone 1 | 2026-11-22 → 2026-11-29 (+7d) | 2026-11-23 → 2026-11-30 (+7d) |  | 78.35d → 71.75d |
| MOD-SWN-PS-014 | Valves, fittings, flow meters – PS2 for Sewerage Network Zone 1 | 2026-11-23 → 2026-11-30 (+7d) | 2026-11-25 → 2026-12-02 (+7d) |  | 78.35d → 71.75d |
| 5 | **Tank with Canopy** | 2027-01-26 → 2027-02-02 (+7d) | 2027-02-14 → 2027-02-27 (+13d) |  |  |
| MOD-SWN-PS-019 | Tank with canopy (per specs/drawings) - PS1 for Sewerage Network Zone 1 | 2027-01-26 → 2027-02-02 (+7d) | 2027-02-14 → 2027-02-27 (+13d) |  | 11.79d → 5.79d |

| ID | Task | Start | Finish | Total float |
| --- | --- | --- | --- | --- |
| 6 | **Pump Well and Valve Chambers** | 2026-10-25 → 2026-11-01 (+7d) | 2027-01-04 → 2027-01-12 (+8d) |  |
| MOD-SWN-PS-022 | Pump well & valve chamber structure – PS1 (2 wells, 12m deep) for Sewerage Network Zone 1 | 2026-10-25 → 2026-11-01 (+7d) | 2026-11-08 → 2026-11-16 (+8d) | 43.6d → 37d |
| MOD-SWN-PS-023 | Concrete wall (5x5x1m) inside PS1 well for Sewerage Network Zone 1 | 2026-11-09 → 2026-11-16 (+7d) | 2026-11-16 → 2026-11-24 (+8d) | 43.6d → 37d |
| MOD-SWN-PS-027 | Pump well & valve chamber structure – PS2 (2 wells, 3m each, 9m depth) for Sewerage Network Zone 1 | 2026-11-09 → 2026-11-16 (+7d) | 2026-11-24 → 2026-12-02 (+8d) | 47.6d → 41d |
| MOD-SWN-PS-024 | 35 mm raked bar SS 316 network chamber PS1 for Sewerage Network Zone 1 | 2026-11-17 → 2026-11-24 (+7d) | 2026-11-17 → 2026-11-25 (+8d) | 43.6d → 37d |
| MOD-SWN-PS-025 | Valve chamber – PS1 for Sewerage Network Zone 1 | 2026-11-18 → 2026-11-25 (+7d) | 2026-11-24 → 2026-12-02 (+8d) | 43.6d → 37d |
| MOD-SWN-PS-026 | Flow meter chamber – PS1 for Sewerage Network Zone 1 | 2026-11-25 → 2026-12-02 (+7d) | 2026-11-29 → 2026-12-07 (+8d) | 43.6d → 37d |
| MOD-SWN-PS-028 | Valve chamber – PS2 for Sewerage Network Zone 1 | 2026-11-30 → 2026-12-07 (+7d) | 2026-12-17 → 2026-12-26 (+9d) | 43.6d → 37d |
| MOD-SWN-PS-029 | Flow meter chamber – PS2 for Sewerage Network Zone 1 | 2026-12-19 → 2026-12-26 (+7d) | 2027-01-04 → 2027-01-12 (+8d) | 43.6d → 37d |
| 8 | **Odor Control System Base/Plinth** | 2026-11-15 → 2026-11-19 (+4d) | 2026-11-21 → 2026-11-26 (+5d) |  |
| MOD-SWN-PS-043 | Concrete plinth below odor control – All PSs for Sewerage Network Zone 1 | 2026-11-15 → 2026-11-19 (+4d) | 2026-11-21 → 2026-11-26 (+5d) | 8.6d → 4d |
| 10 | **Lighting Works** |  | 2026-11-19 → 2026-11-28 (+9d) |  |
| MOD-SWN-PS-052 | 250W Flood Light installation – Each PS for Sewerage Network Zone 1 |  | 2026-11-19 → 2026-11-28 (+9d) | 83d → 76.4d |
| 11 | **Duct Works** | 2026-11-09 → 2026-11-16 (+7d) | 2026-11-16 → 2026-11-24 (+8d) |  |
| MOD-SWN-PS-054 | uPVC duct Track 1 – All PSs for Sewerage Network Zone 1 | 2026-11-09 → 2026-11-16 (+7d) | 2026-11-09 → 2026-11-17 (+8d) | 82.6d → 76d |
| MOD-SWN-PS-055 | uPVC duct Track 2 – All PSs for Sewerage Network Zone 1 | 2026-11-10 → 2026-11-17 (+7d) | 2026-11-11 → 2026-11-19 (+8d) | 82.6d → 76d |
| MOD-SWN-PS-056 | uPVC duct Track 8 – All PSs for Sewerage Network Zone 1 | 2026-11-12 → 2026-11-19 (+7d) | 2026-11-16 → 2026-11-24 (+8d) | 82.6d → 76d |
| 12 | **Grounding Works** | 2026-11-17 → 2026-11-24 (+7d) | 2026-11-19 → 2026-11-28 (+9d) |  |
| MOD-SWN-PS-058 | Grounding pit – Each PS for Sewerage Network Zone 1 | 2026-11-17 → 2026-11-24 (+7d) | 2026-11-17 → 2026-11-25 (+8d) | 82.6d → 76d |
| MOD-SWN-PS-059 | 600x600 Cable pull pit – All PSs for Sewerage Network Zone 1 | 2026-11-18 → 2026-11-25 (+7d) | 2026-11-19 → 2026-11-28 (+9d) | 82.6d → 76d |
| 13 | **Landscaping / Interlocking Tiles** | 2026-10-26 → 2026-10-31 (+5d) | 2026-11-18 → 2026-11-24 (+6d) |  |
| MOD-SWN-PS-061 | Building perimeter interlock tiles for Sewerage Network Zone 1 | 2026-10-26 → 2026-10-31 (+5d) | 2026-11-14 → 2026-11-19 (+5d) | 8.6d → 4d |
| MOD-SWN-PS-062 | Entrance road paving tiles for Sewerage Network Zone 1 | 2026-11-15 → 2026-11-19 (+4d) | 2026-11-18 → 2026-11-24 (+6d) | 83.6d → 79d |
| 14 | **Pumping Station Internal Drainage Network** | 2026-10-24 → 2026-10-31 (+7d) | 2026-10-31 → 2026-11-08 (+8d) |  |
| MOD-SWN-PS-064 | Internal surface drainage channels for Sewerage Network Zone 1 | 2026-10-24 → 2026-10-31 (+7d) | 2026-10-31 → 2026-11-08 (+8d) | 99.6d → 93d |
| 12 | **Rainwater Drainage Network Zone 1** |  | 2026-11-23 → 2026-11-30 (+7d) |  |
| 1 | **Pipe Laying Works** |  | 2026-11-01 → 2026-11-08 (+7d) |  |
| 2 | **Supply & Installation of uPVC Pipes (250–300mm dia)** |  | 2026-10-27 → 2026-11-04 (+8d) |  |
| MOD-RWN-PL-913 | Excavation to required depth UPVC for Rainwater Drainage Network Zone 1 |  | 2026-10-25 → 2026-11-01 (+7d) | -97.25d → -104.85d |
| MOD-RWN-PL-923 | Lean Concrete / Bedding UPVC for Rainwater Drainage Network Zone 1 |  | 2026-10-25 → 2026-11-01 (+7d) | -97.25d → -104.85d |
| MOD-RWN-PL-933 | Laying of uPVC pipe UPVC for Rainwater Drainage Network Zone 1 |  | 2026-10-26 → 2026-11-02 (+7d) | -97.25d → -104.85d |
| MOD-RWN-PL-953 | Test (Pressure-slope) UPVC for Rainwater Drainage Network Zone 1 |  | 2026-10-26 → 2026-11-03 (+8d) | -97.25d → -104.85d |
| MOD-RWN-PL-943 | Coating / Wrapping UPVC for Rainwater Drainage Network Zone 1 |  | 2026-10-26 → 2026-11-03 (+8d) | -91.81d → -99.41d |
| MOD-RWN-PL-963 | Backfilling & Warning Tape UPVC for Rainwater Drainage Network Zone 1 |  | 2026-10-27 → 2026-11-04 (+8d) | -92.81d → -100.41d |
| 4 | **uPVC Connection Pipes (150mm dia)** |  | 2026-11-01 → 2026-11-08 (+7d) |  |
| MOD-RWN-PL-1043 | Lay & connect UPVC Con. for Rainwater Drainage Network Zone 1 |  | 2026-10-26 → 2026-11-03 (+8d) | -97.25d → -104.85d |
| MOD-RWN-PL-1053 | Test (Pressure-slope) UPVC Con. for Rainwater Drainage Network Zone 1 |  | 2026-10-27 → 2026-11-04 (+8d) | -97.25d → -104.85d |
| MOD-RWN-PL-1083 | Coating / Wrapping UPVC Con. for Rainwater Drainage Network Zone 1 |  | 2026-10-31 → 2026-11-08 (+8d) | -97.25d → -104.85d |
| MOD-RWN-PL-1063 | Backfilling & compaction UPVC Con. for Rainwater Drainage Network Zone 1 |  | 2026-11-01 → 2026-11-08 (+7d) | -97.25d → -104.85d |
| 5 | **Precast Concrete Box Culverts** |  | 2026-11-22 → 2026-11-30 (+8d) |  |
| 1 | **Box Culverts (500x500mm to 3500x800mm)** |  | 2026-11-17 → 2026-11-24 (+7d) |  |
| MOD-RWN-PC-003 | Excavation to required depth Box culvert for Rainwater Drainage Network Zone 1 |  | 2026-10-24 → 2026-11-01 (+8d) | -101.51d → -107.81d |
| MOD-RWN-PC-004 | Dewatering and trench shoring Box culvert for Rainwater Drainage Network Zone 1 |  | 2026-10-25 → 2026-11-02 (+8d) | -101.51d → -107.81d |
| MOD-RWN-PC-005 | Bedding preparation (gravel/lean concrete) Box culvert for Rainwater Drainage Network Zone 1 |  | 2026-10-26 → 2026-11-03 (+8d) | -101.51d → -107.81d |
| MOD-RWN-PC-006 | Installation of box culvert units Box culvert for Rainwater Drainage Network Zone 1 |  | 2026-10-31 → 2026-11-07 (+7d) | -101.51d → -107.81d |
| MOD-RWN-PC-007 | Alignment and joint sealing Box culvert for Rainwater Drainage Network Zone 1 |  | 2026-11-02 → 2026-11-09 (+7d) | -96.31d → -102.91d |
| MOD-RWN-PC-008 | Construct headwalls/wing walls (if needed) Box culvert for Rainwater Drainage Network Zone 1 | 2026-11-02 → 2026-11-09 (+7d) | 2026-11-08 → 2026-11-15 (+7d) | -96.31d → -102.91d |
| MOD-RWN-PC-009 | Backfilling and compaction Box culvert for Rainwater Drainage Network Zone 1 | 2026-11-08 → 2026-11-15 (+7d) | 2026-11-14 → 2026-11-21 (+7d) | -96.31d → -102.91d |
| MOD-RWN-PC-010 | Surface finishing Box culvert for Rainwater Drainage Network Zone 1 | 2026-11-14 → 2026-11-21 (+7d) | 2026-11-17 → 2026-11-24 (+7d) | -96.31d → -102.91d |
| 2 | **Tube Culverts at Road Intersections** |  | 2026-11-11 → 2026-11-19 (+8d) |  |
| MOD-RWN-PC-014 | Pipe bedding and twin pipe alignment Tube culvert for Rainwater Drainage Network Zone 1 |  | 2026-10-27 → 2026-11-04 (+8d) | -91.81d → -98.41d |
| MOD-RWN-PC-015 | Pipe laying and jointing Tube culvert for Rainwater Drainage Network Zone 1 |  | 2026-11-02 → 2026-11-10 (+8d) | -91.81d → -98.41d |
| MOD-RWN-PC-016 | Backfilling and road reinstatement Tube culvert for Rainwater Drainage Network Zone 1 | 2026-11-02 → 2026-11-10 (+8d) | 2026-11-11 → 2026-11-19 (+8d) | -91.81d → -98.41d |
| 3 | **Box Culverts at Road Intersections** |  | 2026-11-22 → 2026-11-30 (+8d) |  |
| MOD-RWN-PC-019 | Deep trench excavation with shoring for Rainwater Drainage Network Zone 1 |  | 2026-10-24 → 2026-11-01 (+8d) | -100.74d → -107.34d |
| MOD-RWN-PC-020 | Place bedding material for Rainwater Drainage Network Zone 1 |  | 2026-10-25 → 2026-11-02 (+8d) | -100.74d → -107.34d |
| MOD-RWN-PC-021 | Install precast box culvert for Rainwater Drainage Network Zone 1 | 2026-10-25 → 2026-11-02 (+8d) | 2026-10-29 → 2026-11-07 (+9d) | -100.74d → -107.34d |
| MOD-RWN-PC-022 | Construct connection chambers (if needed) for Rainwater Drainage Network Zone 1 | 2026-10-29 → 2026-11-07 (+9d) | 2026-10-31 → 2026-11-08 (+8d) | -100.74d → -107.34d |
| MOD-RWN-PC-023 | Joint treatment and testing for Rainwater Drainage Network Zone 1 | 2026-10-31 → 2026-11-08 (+8d) | 2026-11-11 → 2026-11-19 (+8d) | -100.74d → -107.34d |
| MOD-RWN-PC-024 | Backfilling and surface reinstatement for Rainwater Drainage Network Zone 1 | 2026-11-11 → 2026-11-19 (+8d) | 2026-11-22 → 2026-11-30 (+8d) | -100.74d → -107.34d |
| 4 | **Manholes** |  | 2026-11-23 → 2026-11-30 (+7d) |  |
| 1 | **Circular GRP Manholes (1200–1800mm dia)** |  | 2026-11-14 → 2026-11-21 (+7d) |  |
| MOD-RWN-MH-003 | Dewatering and safety barriers Circular Manhole for Rainwater Drainage Network Zone 1 |  | 2026-10-29 → 2026-11-05 (+7d) | -93.16d → -99.76d |
| MOD-RWN-MH-004 | Concrete base construction Circular Manhole for Rainwater Drainage Network Zone 1 |  | 2026-10-31 → 2026-11-08 (+8d) | -93.16d → -99.76d |
| MOD-RWN-MH-005 | Install GRP manhole shaft sections Circular Manhole for Rainwater Drainage Network Zone 1 |  | 2026-11-05 → 2026-11-12 (+7d) | -93.16d → -99.76d |
| MOD-RWN-MH-006 | Place slab and cover frame Circular Manhole for Rainwater Drainage Network Zone 1 |  | 2026-11-08 → 2026-11-16 (+8d) | -93.16d → -99.76d |
| MOD-RWN-MH-007 | Waterproofing Circular Manhole for Rainwater Drainage Network Zone 1 |  | 2026-11-11 → 2026-11-18 (+7d) | -93.16d → -99.76d |
| MOD-RWN-MH-008 | Backfilling and compaction Circular Manhole for Rainwater Drainage Network Zone 1 |  | 2026-11-14 → 2026-11-21 (+7d) | -93.16d → -99.76d |
| 3 | **Concrete Manholes for 1500x1500 Box Pipes** |  | 2026-11-16 → 2026-11-23 (+7d) |  |
| MOD-RWN-MH-019 | Base slab and wall shuttering Concrete Manhole 1.5x1.5 for Rainwater Drainage Network Zone 1 |  | 2026-10-29 → 2026-11-05 (+7d) | -95.86d → -101.56d |

| ID | Task | Start | Finish | Complete | Total float |
| --- | --- | --- | --- | --- | --- |
| MOD-RWN-MH-020 | Wall reinforcement and casting Concrete Manhole 1.5x1.5 for Rainwater Drainage Network Zone 1 |  | 2026-11-01 → 2026-11-08 (+7d) |  | -95.86d → -101.56d |
| MOD-RWN-MH-021 | Roof slab with openings Concrete Manhole 1.5x1.5 for Rainwater Drainage Network Zone 1 |  | 2026-11-02 → 2026-11-10 (+8d) |  | -95.86d → -101.56d |
| MOD-RWN-MH-022 | Masonry/benching works inside Concrete Manhole 1.5x1.5 for Rainwater Drainage Network Zone 1 |  | 2026-11-04 → 2026-11-12 (+8d) |  | -95.86d → -101.56d |
| MOD-RWN-MH-023 | Install cover and frame Concrete Manhole 1.5x1.5 for Rainwater Drainage Network Zone 1 |  | 2026-11-10 → 2026-11-17 (+7d) | 20% → 35% | -95.86d → -101.56d |
| MOD-RWN-MH-024 | Backfill in layers Concrete Manhole 1.5x1.5 for Rainwater Drainage Network Zone 1 | 2026-11-10 → 2026-11-17 (+7d) | 2026-11-16 → 2026-11-23 (+7d) |  | -95.86d → -101.56d |
| 2 | **Concrete Manholes for 1000x1000 Box Pipes** |  | 2026-11-23 → 2026-11-30 (+7d) |  |  |
| MOD-RWN-MH-010 | Excavation Concrete Manhole 1x1 for Rainwater Drainage Network Zone 1 |  | 2026-10-29 → 2026-11-05 (+7d) | 80% → 85% | -101.51d → -107.81d |
| MOD-RWN-MH-011 | Base slab and wall shuttering Concrete Manhole 1x1 for Rainwater Drainage Network Zone 1 |  | 2026-10-31 → 2026-11-07 (+7d) |  | -101.51d → -107.81d |
| MOD-RWN-MH-012 | Wall reinforcement and casting Concrete Manhole 1x1 for Rainwater Drainage Network Zone 1 |  | 2026-11-03 → 2026-11-10 (+7d) |  | -101.51d → -107.81d |
| MOD-RWN-MH-013 | Roof slab with openings Concrete Manhole 1x1 for Rainwater Drainage Network Zone 1 |  | 2026-11-08 → 2026-11-15 (+7d) |  | -101.51d → -107.81d |
| MOD-RWN-MH-014 | Masonry/benching works inside Concrete Manhole 1x1 for Rainwater Drainage Network Zone 1 |  | 2026-11-15 → 2026-11-22 (+7d) |  | -101.51d → -107.81d |
| MOD-RWN-MH-015 | Install cover and frame Concrete Manhole 1x1 for Rainwater Drainage Network Zone 1 | 2026-11-15 → 2026-11-22 (+7d) | 2026-11-19 → 2026-11-26 (+7d) |  | -101.51d → -107.81d |
| MOD-RWN-MH-016 | Backfill in layers Concrete Manhole 1x1 for Rainwater Drainage Network Zone 1 | 2026-11-19 → 2026-11-26 (+7d) | 2026-11-23 → 2026-11-30 (+7d) |  | -101.51d → -107.81d |
| 2 | **Chambers and Catch Basins** |  | 2026-10-31 → 2026-11-07 (+7d) |  |  |
| 2 | **Rainwater Catch Basins** |  | 2026-10-31 → 2026-11-07 (+7d) |  |  |
| MOD-RWN-CC-012 | Backfill and surface finish Catch Basin for Rainwater Drainage Network Zone 1 |  | 2026-10-31 → 2026-11-07 (+7d) | 96% → 97% | -81.39d → -87.97d |
| 3 | **Gully Outfalls to Swales** |  | 2026-11-03 → 2026-11-11 (+8d) |  |  |
| 1 | **Gully Outfalls to Swales** |  | 2026-11-01 → 2026-11-09 (+8d) |  |  |
| MOD-RWN-GO-004 | Place concrete apron or pipes Gully Outfall to Swales for Rainwater Drainage Network Zone 1 |  | 2026-10-31 → 2026-11-08 (+8d) |  | -82.64d → -89.24d |
| MOD-RWN-GO-005 | Provide slope protection (riprap) Gully Outfall to Swales for Rainwater Drainage Network Zone 1 |  | 2026-10-31 → 2026-11-08 (+8d) |  | -82.64d → -89.24d |
| MOD-RWN-GO-006 | Compact and shape terrain Gully Outfall to Swales for Rainwater Drainage Network Zone 1 |  | 2026-11-01 → 2026-11-09 (+8d) |  | -82.64d → -89.24d |
| 2 | **Riprap Works & Protection** |  | 2026-11-03 → 2026-11-11 (+8d) |  |  |
| MOD-RWN-GO-008 | Lay filter fabric/membrane for Rainwater Drainage Network Zone 1 |  | 2026-10-31 → 2026-11-08 (+8d) |  | -85.03d → -91.63d |
| MOD-RWN-GO-009 | Place riprap/stone layer for Rainwater Drainage Network Zone 1 |  | 2026-11-02 → 2026-11-10 (+8d) |  | -85.03d → -91.63d |
| MOD-RWN-GO-010 | Compact edges for Rainwater Drainage Network Zone 1 |  | 2026-11-03 → 2026-11-11 (+8d) |  | -85.03d → -91.63d |
| 6 | **Backfilling & Bedding** |  | 2026-11-09 → 2026-11-17 (+8d) |  |  |
| 1 | **Backfilling Materials (Type A – 201–700mm Pipes)** |  | 2026-11-03 → 2026-11-10 (+7d) |  |  |
| MOD-RWN-BB-002 | Place granular bedding under pipe for Rainwater Drainage Network Zone 1 |  | 2026-10-24 → 2026-11-01 (+8d) |  | -95.71d → -102.31d |
| MOD-RWN-BB-003 | Lay and align pipe for Rainwater Drainage Network Zone 1 |  | 2026-10-25 → 2026-11-01 (+7d) |  | -84.45d → -91.05d |
| MOD-RWN-BB-004 | Backfill up to spring line for Rainwater Drainage Network Zone 1 |  | 2026-10-25 → 2026-11-01 (+7d) |  | -84.45d → -91.05d |
| MOD-RWN-BB-005 | Compact layer-wise for Rainwater Drainage Network Zone 1 |  | 2026-10-25 → 2026-11-02 (+8d) |  | -84.45d → -91.05d |
| MOD-RWN-BB-006 | Final fill to subgrade level for Rainwater Drainage Network Zone 1 | 2026-10-27 → 2026-11-03 (+7d) | 2026-11-03 → 2026-11-10 (+7d) |  | -84.45d → -91.05d |
| 2 | **Gravel Bedding & Filter Cloth for uPVC Drain Pipes** |  | 2026-11-09 → 2026-11-17 (+8d) |  |  |
| MOD-RWN-BB-008 | Line trench with filter cloth for Rainwater Drainage Network Zone 1 |  | 2026-10-24 → 2026-10-31 (+7d) |  | -90d → -96.6d |
| MOD-RWN-BB-009 | Place and compact gravel bedding for Rainwater Drainage Network Zone 1 |  | 2026-10-24 → 2026-11-01 (+8d) |  | -90d → -96.6d |
| MOD-RWN-BB-010 | Lay pipe within gravel zone for Rainwater Drainage Network Zone 1 |  | 2026-10-24 → 2026-11-01 (+8d) |  | -90d → -96.6d |
| MOD-RWN-BB-011 | Wrap filter cloth above pipe for Rainwater Drainage Network Zone 1 |  | 2026-10-26 → 2026-11-02 (+7d) |  | -90d → -96.6d |
| MOD-RWN-BB-012 | Final fill and trench restoration for Rainwater Drainage Network Zone 1 | 2026-10-26 → 2026-11-03 (+8d) | 2026-11-09 → 2026-11-17 (+8d) |  | -90d → -96.6d |
| 13 | **Potable Water Network Zone 1** |  | 2026-12-10 → 2026-12-19 (+9d) |  |  |
| 1 | **Pipe Installation Works** |  | 2026-10-25 → 2026-11-01 (+7d) |  |  |
| MOD-PWN-PI-383 | Lean Concrete / Pipe Bedding Preparation for Potable Water Network Zone 1 |  | 2026-10-24 → 2026-10-31 (+7d) |  | 66.63d → 59.38d |
| MOD-PWN-PI-393 | HDPE Pipe Laying (200 mm to 710 mm) for Potable Water Network Zone 1 |  | 2026-10-24 → 2026-11-01 (+8d) |  | 66.63d → 59.38d |
| MOD-PWN-PI-413 | Coating / Wrapping for Potable Water Network Zone 1 |  | 2026-10-25 → 2026-11-01 (+7d) | 96% → 97% | 66.63d → 59.38d |
| MOD-PWN-PI-403 | Test (Pressure-slope) for Potable Water Network Zone 1 |  | 2026-10-24 → 2026-11-01 (+8d) |  | 66.63d → 59.38d |
| MOD-PWN-PI-423 | Backfilling & Warrning Tape for Potable Water Network Zone 1 |  | 2026-10-25 → 2026-11-01 (+7d) | 80% → 90% | 66.63d → 59.38d |
| 2 | **Valve Installation & Chambers** |  | 2026-10-26 → 2026-11-03 (+8d) |  |  |
| MOD-PWN-VC-004 | Valve Chamber Excavation for Potable Water Network Zone 1 |  | 2026-10-24 → 2026-10-31 (+7d) |  | 37.7d → 31.1d |
| MOD-PWN-VC-005 | RC Slab, Walls, or Precast Chambers for Potable Water Network Zone 1 |  | 2026-10-24 → 2026-11-01 (+8d) |  | 56.57d → 49.97d |
| MOD-PWN-VC-001 | Gate Valves (225–710 mm) for Potable Water Network Zone 1 |  | 2026-10-24 → 2026-11-01 (+8d) |  | 56.4d → 49.92d |
| MOD-PWN-VC-003 | 3-exit (2 x 2.5-inch and 1 x 4-inch) dry vacuum cylinder detachable fire nozzle for Potable Water Network Zone 1 |  | 2026-10-24 → 2026-11-01 (+8d) | 95% → 96% | 56.4d → 49.92d |
| MOD-PWN-VC-002 | Butterfly Valves (355, 500, 630 mm) for Potable Water Network Zone 1 |  | 2026-10-24 → 2026-11-01 (+8d) |  | 56.4d → 49.92d |
| MOD-PWN-VC-006 | Fixing Covers, Gratings, Frames for Potable Water Network Zone 1 |  | 2026-10-24 → 2026-11-01 (+8d) |  | 56.4d → 49.92d |
| MOD-PWN-VC-007 | Tagging & Painting for Potable Water Network Zone 1 | 2026-10-25 → 2026-11-01 (+7d) | 2026-10-26 → 2026-11-03 (+8d) |  | 56.4d → 49.92d |
| 3 | **Flow Meter Installation** |  | 2026-12-10 → 2026-12-19 (+9d) |  |  |
| MOD-PWN-FM-002 | RC or Precast Chamber Construction for Potable Water Network Zone 1 |  | 2026-10-27 → 2026-11-03 (+7d) |  | 37.7d → 31.1d |
| MOD-PWN-FM-003 | Flowmeter Installation & Pipe Integration for Potable Water Network Zone 1 |  | 2026-11-28 → 2026-12-06 (+8d) |  | 17.65d → 11.05d |
| MOD-PWN-FM-004 | Wiring/Cabling if applicable for Potable Water Network Zone 1 | 2026-11-28 → 2026-12-06 (+8d) | 2026-12-07 → 2026-12-15 (+8d) |  | 17.65d → 11.05d |
| MOD-PWN-FM-005 | Calibration & Commissioning for Potable Water Network Zone 1 | 2026-12-07 → 2026-12-15 (+8d) | 2026-12-10 → 2026-12-19 (+9d) |  | 17.65d → 11.05d |
| 4 | **Washout & Air Valve Chambers** |  | 2026-11-01 → 2026-11-08 (+7d) |  |  |
| MOD-PWN-WA-003 | Pipe Work for Potable Water Network Zone 1 |  | 2026-10-25 → 2026-11-01 (+7d) | 90% → 91% | 51.4d → 46.2d |
| MOD-PWN-WA-004 | Washout (Valve + Outlet) Installation for Potable Water Network Zone 1 |  | 2026-10-26 → 2026-11-02 (+7d) | 80% → 90% | 51.4d → 46.2d |
| MOD-PWN-WA-005 | Air Valve Rooms (Valve + Outlet) Installation for Potable Water Network Zone 1 |  | 2026-10-28 → 2026-11-03 (+6d) | 80% → 84% | 51.4d → 46.2d |
| MOD-PWN-WA-006 | Covers, Ladders & Tags for Potable Water Network Zone 1 |  | 2026-10-28 → 2026-11-04 (+7d) | 80% → 85% | 51.4d → 46.2d |
| MOD-PWN-WA-007 | Backfilling & Final Finishing for Potable Water Network Zone 1 | 2026-10-29 → 2026-11-04 (+6d) | 2026-11-01 → 2026-11-08 (+7d) |  | 51.4d → 46.2d |
| 7 | **Irrigation Network Zone 1** |  | 2026-11-25 → 2026-12-03 (+8d) |  |  |
| 1 | **Excavation, Pipe Laying & Backfilling** |  | 2026-10-24 → 2026-11-01 (+8d) |  |  |
| MOD-IRN-EB-400 | Lean Concrete / Pipe Bedding with Type B Material for Irrigation Network Zone 1 |  | 2026-10-24 → 2026-10-31 (+7d) |  | 67.86d → 60.26d |
| MOD-IRN-EB-410 | HDPE Pipe Laying (125 mm to 630 mm) for Irrigation Network Zone 1 |  | 2026-10-24 → 2026-10-31 (+7d) |  | 67.86d → 60.26d |
| MOD-IRN-EB-420 | Test (Pressure-slope) for Irrigation Network Zone 1 |  | 2026-10-24 → 2026-10-31 (+7d) |  | 67.86d → 60.26d |
| MOD-IRN-EB-430 | Coating / Wrapping for Irrigation Network Zone 1 |  | 2026-10-24 → 2026-10-31 (+7d) |  | 67.86d → 60.26d |

| ID | Task | Start | Finish | Complete | Total float |
| --- | --- | --- | --- | --- | --- |
| MOD-IRN-EB-440 | Backfilling & Warrning Tape for Irrigation Network Zone 1 |  | 2026-10-24 → 2026-11-01 (+8d) |  | 67.86d → 60.26d |
| 2 | **Valves and Appurtenances** |  | 2026-10-26 → 2026-11-02 (+7d) |  |  |
| MOD-IRN-VA-001 | Supply & Installation of Valves (Gate Valve) for Irrigation Network Zone 1 |  | 2026-10-24 → 2026-10-31 (+7d) |  | 53.55d → 46.95d |
| MOD-IRN-VA-002 | Supply & Installation of Valves (Butterfly Valve) for Irrigation Network Zone 1 |  | 2026-10-24 → 2026-11-01 (+8d) |  | 53.55d → 46.95d |
| MOD-IRN-VA-003 | Installation of Flanges, Bolts, Collars, Nuts for Irrigation Network Zone 1 |  | 2026-10-24 → 2026-11-01 (+8d) |  | 53.55d → 46.95d |
| MOD-IRN-VA-005 | Support Brackets/Anchor Blocks for Irrigation Network Zone 1 |  | 2026-10-26 → 2026-11-02 (+7d) | 60% → 70% | 57.14d → 50.74d |
| MOD-IRN-VA-004 | Valve Pressure Testing for Irrigation Network Zone 1 |  | 2026-10-25 → 2026-11-02 (+8d) |  | 57.14d → 50.74d |
| 3 | **Valve Rooms** |  | 2026-10-26 → 2026-11-03 (+8d) |  |  |
| MOD-IRN-VR-002 | Blinding Concrete Valve Chamber for Irrigation Network Zone 1 |  | 2026-10-24 → 2026-11-01 (+8d) |  | 56.56d → 49.96d |
| MOD-IRN-VR-003 | RCC Base Slab & Chamber Walls Valve Chamber for Irrigation Network Zone 1 |  | 2026-10-25 → 2026-11-01 (+7d) |  | 56.56d → 49.96d |
| MOD-IRN-VR-004 | Block Wall Construction (if any) Valve Chamber for Irrigation Network Zone 1 |  | 2026-10-25 → 2026-11-02 (+8d) |  | 56.56d → 49.96d |
| MOD-IRN-VR-005 | Installation of Valve inside the Room Valve Chamber for Irrigation Network Zone 1 |  | 2026-10-26 → 2026-11-02 (+7d) |  | 56.56d → 49.96d |
| MOD-IRN-VR-006 | Fixing Frame & Cover Valve Chamber for Irrigation Network Zone 1 |  | 2026-10-26 → 2026-11-03 (+8d) |  | 56.56d → 49.96d |
| MOD-IRN-VR-007 | Backfilling and Finishing Valve Chamber for Irrigation Network Zone 1 |  | 2026-10-26 → 2026-11-03 (+8d) |  | 56.56d → 49.96d |
| 4 | **Washout Chambers** |  | 2026-10-24 → 2026-11-01 (+8d) |  |  |
| MOD-IRN-WC-005 | Manhole Frame, Cover & Ladder Fixing Washout Chamber for Irrigation Network Zone 1 |  | 2026-10-24 → 2026-11-01 (+8d) |  | 58.77d → 52.17d |
| MOD-IRN-WC-006 | Backfilling & Reinstatement Washout Chamber for Irrigation Network Zone 1 |  | 2026-10-24 → 2026-11-01 (+8d) |  | 58.77d → 52.17d |
| 6 | **Flow Meter Chambers** |  | 2026-11-25 → 2026-12-03 (+8d) |  |  |
| MOD-IRN-FC-003 | Flow Meter Installation (280, 300, 500 mm) Flow Meter Chamber for Irrigation Network Zone 1 |  | 2026-11-22 → 2026-11-29 (+7d) |  | 30.75d → 24.15d |
| MOD-IRN-FC-004 | Integration with Pipework Flow Meter Chamber for Irrigation Network Zone 1 |  | 2026-11-22 → 2026-11-30 (+8d) |  | 30.75d → 24.15d |
| MOD-IRN-FC-005 | Testing & Calibration Flow Meter Chamber for Irrigation Network Zone 1 | 2026-11-22 → 2026-11-30 (+8d) | 2026-11-24 → 2026-12-02 (+8d) |  | 30.75d → 24.15d |
| MOD-IRN-FC-006 | Cover and Access Arrangement Flow Meter Chamber for Irrigation Network Zone 1 | 2026-11-24 → 2026-12-02 (+8d) | 2026-11-25 → 2026-12-03 (+8d) |  | 30.75d → 24.15d |
| 1 | **General** |  | 2027-09-29 → 2027-10-03 (+4d) |  |  |
| 3 | **Local Roads** |  | 2027-06-13 → 2027-06-09 (-4d) |  |  |
| 1 | **Bituminous Construction** | 2027-04-10 → 2027-04-07 (-3d) | 2027-05-04 → 2027-05-01 (-3d) |  |  |
| 1 | **Bituminous Foundation Layer (MC 1)** | 2027-04-10 → 2027-04-07 (-3d) | 2027-04-19 → 2027-04-15 (-4d) |  |  |
| MOD-LOR-BC-002 | Prepare subgrade for Local Roads | 2027-04-10 → 2027-04-07 (-3d) | 2027-04-14 → 2027-04-11 (-3d) |  | -42.91d → -40d |
| MOD-LOR-BC-003 | Apply MC 1 bituminous layer for Local Roads | 2027-04-14 → 2027-04-12 (-2d) | 2027-04-19 → 2027-04-15 (-4d) |  | -42.91d → -40d |
| 2 | **Bituminous Base Layer (Grade 1 - Class A, 70mm)** | 2027-04-19 → 2027-04-17 (-2d) | 2027-04-25 → 2027-04-21 (-4d) |  |  |
| MOD-LOR-BC-005 | Spread and compact bituminous mix for Local Roads | 2027-04-19 → 2027-04-17 (-2d) | 2027-04-25 → 2027-04-21 (-4d) |  | -42.91d → -40d |
| 3 | **Bituminous Top Layer (Grade 1 - Class A, 50mm)** | 2027-04-25 → 2027-04-22 (-3d) | 2027-05-04 → 2027-05-01 (-3d) |  |  |
| MOD-LOR-BC-007 | Apply adhesive layer (R.C) for Local Roads | 2027-04-25 → 2027-04-22 (-3d) | 2027-04-29 → 2027-04-26 (-3d) |  | -42.91d → -40d |
| MOD-LOR-BC-008 | Spread and compact bituminous concrete for Local Roads | 2027-04-29 → 2027-04-27 (-2d) | 2027-05-04 → 2027-05-01 (-3d) |  | -42.91d → -40d |
| 2 | **Precast Curbs (Type K1-D)** |  | 2027-06-13 → 2027-06-09 (-4d) |  |  |
| MOD-LOR-PC-001 | Excavation & Subgrade Preparation for Local Roads |  | 2027-05-09 → 2027-05-05 (-4d) |  | -42.91d → -40d |
| MOD-LOR-PC-002 | Pour concrete base & hunching for Local Roads |  | 2027-05-18 → 2027-05-10 (-8d) |  | -42.91d → -40d |
| MOD-LOR-PC-003 | Install precast curbs for Local Roads |  | 2027-05-30 → 2027-05-26 (-4d) |  | -42.91d → -40d |
| MOD-LOR-PC-004 | Backfill & compact for Local Roads |  | 2027-06-03 → 2027-05-31 (-3d) |  | -42.91d → -40d |
| MOD-LOR-PC-005 | Finishing & Waste Disposal for Local Roads | 2027-06-03 → 2027-06-01 (-2d) | 2027-06-13 → 2027-06-09 (-4d) |  | -42.91d → -40d |
| 2 | **Arterial Roads** |  | 2027-04-10 → 2027-04-06 (-4d) |  |  |
| 2 | **Precast Curbs (Type K1-D)** |  | 2027-04-10 → 2027-04-06 (-4d) |  |  |
| MOD-ARR-PC-001 | Excavation & Subgrade Prep for Arterial Roads |  | 2027-01-25 → 2027-01-24 (-1d) | 22% → 35% | -42.91d → -40d |
| MOD-ARR-PC-002 | Concrete Base & Hunching for Arterial Roads |  | 2027-02-02 → 2027-01-31 (-2d) | 20% → 25% | -42.91d → -40d |
| MOD-ARR-PC-003 | Curb Installation for Arterial Roads |  | 2027-03-08 → 2027-03-02 (-6d) | 13% → 20% | -42.91d → -40d |
| MOD-ARR-PC-004 | Backfilling & Compaction for Arterial Roads | 2027-03-08 → 2027-03-02 (-6d) | 2027-03-22 → 2027-03-18 (-4d) |  | -42.91d → -40d |
| MOD-ARR-PC-005 | Finishing for Arterial Roads | 2027-03-22 → 2027-03-20 (-2d) | 2027-03-31 → 2027-03-28 (-3d) |  | -42.91d → -40d |
| MOD-ARR-PC-006 | Waste Disposal for Arterial Roads | 2027-03-31 → 2027-03-29 (-2d) | 2027-04-10 → 2027-04-06 (-4d) |  | -42.91d → -40d |
| 4 | **Communications** |  | 2027-05-06 → 2027-04-29 (-7d) |  |  |
| 1 | **Ductworks** |  | 2027-04-18 → 2027-04-11 (-7d) |  |  |
| 1 | **Concrete-Protected Service Culverts (50mm, 8 Outlets)** |  | 2027-04-05 → 2027-03-30 (-6d) |  |  |
| MOD-COC-DW-004 | Backfilling & Compaction for Communications |  |  | 86% → 88% |  |
| MOD-COC-DW-005 | Testing & Restoration for Communications | 2027-03-06 → 2026-10-27 A (-130d) | 2027-04-05 → 2027-03-30 (-6d) | 0% → 24% | 5.79d → 11.55d |
| 2 | **Road Crossing Ducts (Exit 8)** |  | 2027-04-18 → 2027-04-11 (-7d) |  |  |
| MOD-COC-DW-007 | Horizontal Directional Drilling (HDD) for Communications |  | 2027-04-07 → 2027-04-01 (-6d) |  | 5.79d → 11.55d |
| MOD-COC-DW-008 | Duct Installation & Joint Sealing for Communications |  | 2027-04-10 → 2027-04-03 (-7d) | 88% → 90% | 5.79d → 11.55d |
| MOD-COC-DW-009 | Asphalt/Paving Restoration for Communications |  | 2027-04-18 → 2027-04-11 (-7d) |  | 5.79d → 11.55d |
| 3 | **Manholes (Telecom, 2000x1000x1001mm)** |  | 2027-05-06 → 2027-04-29 (-7d) |  |  |
| MOD-COC-MH-002 | Concrete Works - Foundation - Wall - Roof for Communications |  | 2027-04-18 → 2027-04-11 (-7d) |  | 5.79d → 11.55d |
| MOD-COC-MH-003 | Frame/Cover Installation for Communications |  | 2027-04-18 → 2027-04-11 (-7d) |  | 5.79d → 11.55d |
| MOD-COC-MH-004 | Testing & Handover for Communications | 2027-04-18 → 2027-04-11 (-7d) | 2027-05-06 → 2027-04-29 (-7d) |  | 5.79d → 11.55d |
| 11 | **Landscape** |  | 2027-09-29 → 2027-10-03 (+4d) |  |  |
| 1 | **Supply & Planting of Trees and Shrubs** | 2027-03-28 → 2027-03-31 (+3d) | 2027-07-26 → 2027-07-29 (+3d) |  |  |
| 15 | **planting of trees, shrubs, and vines** | 2027-03-28 → 2027-03-31 (+3d) | 2027-07-26 → 2027-07-29 (+3d) |  |  |
| MOD-LNS-PT-002 | Site demarcation and marking of plant locations for Landscape | 2027-03-28 → 2027-03-31 (+3d) | 2027-04-06 → 2027-04-10 (+4d) |  | -134.66d → -137.9d |
| MOD-LNS-PT-003 | Excavation of planting pits as per specification for Landscape | 2027-04-06 → 2027-04-10 (+4d) | 2027-04-25 → 2027-04-28 (+3d) |  | -134.66d → -137.9d |
| MOD-LNS-PT-004 | Placement of sweet soil/potting soil as required for Landscape | 2027-04-25 → 2027-04-28 (+3d) | 2027-05-24 → 2027-05-27 (+3d) |  | -134.66d → -137.9d |
| MOD-LNS-PT-005 | Placement of gravel bed for drainage (if applicable) for Landscape | 2027-05-24 → 2027-05-27 (+3d) | 2027-06-12 → 2027-06-15 (+3d) |  | -134.66d → -137.9d |
| MOD-LNS-PT-006 | Planting of Palm tree, shrubs and trees for Landscape | 2027-06-12 → 2027-06-15 (+3d) | 2027-06-19 → 2027-06-22 (+3d) |  | -134.66d → -137.9d |
| MOD-LNS-PT-007 | Backfilling and compacting around the plant base for Landscape | 2027-06-19 → 2027-06-22 (+3d) | 2027-06-23 → 2027-06-27 (+4d) |  | -79.66d → -82.9d |
| MOD-LNS-PT-008 | Installation of semi-permeable membrane (if required) for Landscape | 2027-06-23 → 2027-06-27 (+4d) | 2027-07-12 → 2027-07-15 (+3d) |  | -79.66d → -82.9d |

| ID | Task | Start | Finish | Total float |
| --- | --- | --- | --- | --- |
| MOD-LNS-PT-009 | Initial watering and mulching for Landscape | 2027-07-12 → 2027-07-15 (+3d) | 2027-07-21 → 2027-07-25 (+4d) | -79.66d → -82.9d |
| MOD-LNS-PT-010 | Labeling/tagging (if specified) for Landscape | 2027-07-21 → 2027-07-25 (+4d) | 2027-07-26 → 2027-07-29 (+3d) | -79.66d → -82.9d |
| 16 | **Gravel Layer and Bed Preparation** |  | 2027-04-20 → 2027-04-24 (+4d) |  |
| 17 | **Installation of gravel layers and soil beds to support planting and drainage.** |  | 2027-04-20 → 2027-04-24 (+4d) |  |
| MOD-LNS-GL-004 | Placement of 50mm gravel layer for green areas for Landscape | 2027-03-16 → 2027-03-20 (+4d) | 2027-03-28 → 2027-03-31 (+3d) | -134.66d → -137.9d |
| MOD-LNS-GL-005 | Placement of 150mm gravel bed for drainage network for Landscape | 2027-03-28 → 2027-03-31 (+3d) | 2027-04-04 → 2027-04-07 (+3d) | -134.66d → -137.9d |
| MOD-LNS-GL-006 | Spreading and compacting the gravel for Landscape | 2027-04-04 → 2027-04-07 (+3d) | 2027-04-11 → 2027-04-14 (+3d) | -0.66d → -3.9d |
| MOD-LNS-GL-007 | Overlay of semi-permeable membrane (if applicable) for Landscape | 2027-04-11 → 2027-04-14 (+3d) | 2027-04-15 → 2027-04-19 (+4d) | -0.66d → -3.9d |
| MOD-LNS-GL-008 | Spreading of potting soil/sweet soil as top layer for Landscape | 2027-04-15 → 2027-04-19 (+4d) | 2027-04-20 → 2027-04-24 (+4d) | -0.66d → -3.9d |
| 2 | **Landscape Irrigation System** | 2027-06-19 → 2027-06-22 (+3d) | 2027-09-29 → 2027-10-03 (+4d) |  |
| 17 | **Design, supply, and installation of irrigation lines for arterial road landscape zones.** | 2027-06-19 → 2027-06-22 (+3d) | 2027-09-29 → 2027-10-03 (+4d) |  |
| MOD-LNS-LI-002 | Approval of design and layout by Owner/Engineer for Landscape | 2027-06-19 → 2027-06-22 (+3d) | 2027-06-27 → 2027-06-30 (+3d) | -134.66d → -137.9d |
| MOD-LNS-LI-003 | Excavation for main and lateral lines for Landscape | 2027-06-27 → 2027-06-30 (+3d) | 2027-07-13 → 2027-07-17 (+4d) | -134.66d → -137.9d |
| MOD-LNS-LI-004 | Supply and installation of irrigation piping and fittings for Landscape | 2027-07-13 → 2027-07-17 (+4d) | 2027-07-20 → 2027-07-24 (+4d) | -134.66d → -137.9d |
| MOD-LNS-LI-005 | Valve box installation and controller placement for Landscape | 2027-07-20 → 2027-07-24 (+4d) | 2027-08-05 → 2027-08-09 (+4d) | -134.66d → -137.9d |
| MOD-LNS-LI-006 | Connection to water source and pump system (if applicable) for Landscape | 2027-08-05 → 2027-08-09 (+4d) | 2027-08-29 → 2027-09-01 (+3d) | -134.66d → -137.9d |
| MOD-LNS-LI-007 | Testing of the irrigation network for leaks and performance for Landscape | 2027-08-29 → 2027-09-01 (+3d) | 2027-09-01 → 2027-09-05 (+4d) | -134.66d → -137.9d |
| MOD-LNS-LI-008 | Backfilling and surface reinstatement for Landscape | 2027-09-01 → 2027-09-05 (+4d) | 2027-09-21 → 2027-09-26 (+5d) | -134.66d → -137.9d |
| MOD-LNS-LI-009 | Commissioning and operational approval for Landscape | 2027-09-21 → 2027-09-26 (+5d) | 2027-09-29 → 2027-10-03 (+4d) | -134.66d → -137.9d |
| 9 | **Testing & Commissioning & Closeout** |  | 2027-10-24 → 2027-10-27 (+3d) |  |
| 1 | **Testing & Commissioning** |  | 2027-06-06 → 2027-06-13 (+7d) |  |
| 1 | **Zone 3** |  | 2027-06-06 → 2027-06-13 (+7d) |  |
| A103610 | Testing and Commissioning for Irrigation Network Zone 3 |  | 2026-12-26 → 2027-01-02 (+7d) | 62.23d → 55.63d |
| A103590 | Testing and Commissioning for Rain Water Drainage Network Zone 3 |  | 2026-12-21 → 2026-12-28 (+7d) | 66.58d → 59.98d |
| A103600 | Testing and Commissioning for Potable Water Network Zone 3 |  | 2026-12-07 → 2026-12-15 (+8d) | 78.03d → 71.43d |
| A102060 | Testing and Commissioning for Sewerage Network Zone 3 |  | 2027-01-05 → 2027-01-11 (+6d) | 53.58d → 48.08d |
| A103620 | Testing and Commissioning for Pumping Station Zone 3 | 2027-05-08 → 2027-05-19 (+11d) | 2027-06-06 → 2027-06-13 (+7d) | -57.35d → -63.95d |
| 2 | **Zone 2** |  | 2027-01-04 → 2027-01-12 (+8d) |  |
| A103660 | Testing and Commissioning for Potable Water Network Zone 2 |  | 2026-12-16 → 2026-12-24 (+8d) | 70.05d → 63.45d |
| A103670 | Testing and Commissioning for Irrigation Network Zone 2 |  | 2026-12-03 → 2026-12-12 (+9d) | 81.15d → 74.55d |
| A103640 | Testing and Commissioning for Sewerage Network Zone 2 |  | 2027-01-04 → 2027-01-12 (+8d) | 53.8d → 47.17d |
| A103650 | Testing and Commissioning for Rain Water Drainage Network Zone 2 |  | 2026-12-08 → 2026-12-15 (+7d) | 77.05d → 70.77d |
| 3 | **Zone 1** |  | 2027-04-15 → 2027-04-22 (+7d) |  |
| A103710 | Testing and Commissioning for Potable Water Network Zone 1 |  | 2026-12-15 → 2026-12-23 (+8d) | 70.65d → 64.05d |
| A103700 | Testing and Commissioning for Rain Water Drainage Network Zone 1 |  | 2026-11-30 → 2026-12-07 (+7d) | 84.48d → 78.18d |
| A103720 | Testing and Commissioning for Irrigation Network Zone 1 |  | 2026-12-02 → 2026-12-10 (+8d) | 81.65d → 75.05d |
| A103690 | Testing and Commissioning for Sewerage Network Zone 1 |  | 2027-01-12 → 2027-01-18 (+6d) | 46.7d → 42.35d |
| A103730 | Testing and Commissioning for Pumping Station Zone 1 | 2027-04-04 → 2027-04-11 (+7d) | 2027-04-15 → 2027-04-22 (+7d) | -17.21d → -23.21d |
| 4 | **General** |  | 2027-05-08 → 2027-05-01 (-7d) |  |
| A103630 | Testing and Commissioning for Communication |  | 2027-05-08 → 2027-05-01 (-7d) | 5.79d → 11.55d |
| 2 | **As-Built** |  | 2027-10-24 → 2027-10-27 (+3d) |  |
| HO-23 | Roadworks as-built Submittals & Approval | 2027-06-13 → 2027-06-10 (-3d) | 2027-07-07 → 2027-07-04 (-3d) | -42.91d → -40d |
| HO-0001 | Mechanical as-built Submittals & Approval | 2027-06-06 → 2027-06-13 (+7d) | 2027-06-30 → 2027-07-07 (+7d) | -57.35d → -63.95d |
| HO-3 | Electrical as-built Submittals & Approval | 2027-06-06 → 2027-06-13 (+7d) | 2027-06-30 → 2027-07-07 (+7d) | -36.35d → -42.95d |
| HO-33 | Landscape as-built Submittals & Approval | 2027-09-29 → 2027-10-03 (+4d) | 2027-10-24 → 2027-10-27 (+3d) | -134.66d → -137.9d |
| 3 | **Handover** | 2027-06-30 → 2027-07-07 (+7d) | 2027-07-25 → 2027-08-01 (+7d) |  |
| HO-0003 | Handover & Demobilization | 2027-06-30 → 2027-07-07 (+7d) | 2027-07-25 → 2027-08-01 (+7d) | -57.35d → -63.95d |

## Version 7 (data date 2026-11-07, saved 2026-11-08, file 38-MOD-2937-B4-Up- 11-08-26.xer)

Last finish 2027-10-27 → 2027-11-03 (+7d).

Changed:

| ID | Task | Start | Finish | Total float |
| --- | --- | --- | --- | --- |
| 1 | **Milestones** |  | 2027-10-27 → 2027-11-03 (+7d) |  |
| MIL-0003 | Submission of Report, Work Plan, and Schedule | 2026-10-31 → 2026-11-07 (+7d) | 2026-10-31 → 2026-11-07 (+7d) | 199.5d → 193d |
| MIL-0004 | Submission and Approval of Drawings and Specifications | 2026-11-05 → 2026-11-12 (+7d) | 2026-11-05 → 2026-11-12 (+7d) | -189d → -196d |
| MIL-0005 | Completion of Water Networks and Tanks | 2027-01-20 → 2027-01-26 (+6d) | 2027-01-20 → 2027-01-26 (+6d) | -20d → -26.5d |
| MIL-0008 | Final Handover | 2027-10-27 → 2027-11-03 (+7d) | 2027-10-27 → 2027-11-03 (+7d) | -161.88d → -168.38d |
| 2 | **Mobilization** |  | 2027-01-20 → 2027-01-26 (+6d) |  |
| 8 | **Deliverables** |  | 2027-01-20 → 2027-01-26 (+6d) |  |
| 1 | **Submittals** |  | 2027-01-09 → 2027-01-14 (+5d) |  |
| S10002 | Prepare & Submit Method of Statement |  | 2026-11-04 → 2026-11-10 (+6d) | 43.8d → 38.4d |
| S100015 | Prepare & Submit Pre-commissioning/ Commissioning Plan/ Startup/ Testing / Handover Plan | 2026-10-31 → 2026-11-07 (+7d) | 2027-01-09 → 2027-01-14 (+5d) | -17.2d → -22.6d |
| 2 | **Approvals** |  | 2027-01-20 → 2027-01-26 (+6d) |  |
| S100106 | Approval of Method of Statement |  | 2026-11-10 → 2026-11-16 (+6d) | 43.8d → 38.4d |
| S100086 | Approval of Pre-commissioning/ Commissioning Plan/ Startup/ Testing / Handover Plan | 2027-01-09 → 2027-01-16 (+7d) | 2027-01-20 → 2027-01-26 (+6d) | -17.2d → -22.6d |
| 7 | **Engineering** |  | 2026-11-12 → 2026-11-18 (+6d) |  |
| 3 | **Shop Drawing** |  | 2026-11-05 → 2026-11-12 (+7d) |  |
| 2 | **Approvals** |  | 2026-11-05 → 2026-11-12 (+7d) |  |
| A1630 | Landscape details approval |  | 2026-11-05 → 2026-11-12 (+7d) | -132d → -137d |
| 1 | **Material Submittal & Approval** |  | 2026-11-12 → 2026-11-18 (+6d) |  |
| 20 | **Long Lead Items** |  | 2026-11-04 → 2026-11-11 (+7d) |  |
| 13 | **Generators & Fuel Tanks - PS & Control Bldg backup power** |  | 2026-11-04 → 2026-11-11 (+7d) |  |
| A102930 | Material Submittal for Generators & Fuel Tanks - PS & Control Bldg backup power |  | 2026-11-03 → 2026-11-10 (+7d) | -19.21d → -24.21d |
| A102940 | Material Approval for Generators & Fuel Tanks - PS & Control Bldg backup power |  | 2026-11-04 → 2026-11-11 (+7d) | -19.21d → -24.21d |
| 21 | **Short Lead Items** |  | 2026-11-12 → 2026-11-18 (+6d) |  |
| 15 | **Interlock Tiles / Curbstone - Roads, Sidewalks, Landscape** |  | 2026-11-11 → 2026-11-17 (+6d) |  |
| A103180 | Material Approval for Interlock Tiles / Curbstone - Roads, Sidewalks, Landscape |  | 2026-11-11 → 2026-11-17 (+6d) | 10.6d → 6.2d |
| 16 | **Landscaping Materials (Soil, Plants) - Final works, softscape** |  | 2026-11-12 → 2026-11-18 (+6d) |  |
| A103200 | Material Approval for Landscaping Materials (Soil, Plants) - Final works, softscape |  | 2026-11-12 → 2026-11-18 (+6d) | -115.9d → -120.3d |
| 3 | **Procurement** |  | 2027-03-20 → 2027-03-27 (+7d) |  |
| 1 | **Prequalification** |  | 2026-11-05 → 2026-11-11 (+6d) |  |
| 21 | **Short Lead Items** |  | 2026-11-05 → 2026-11-11 (+6d) |  |
| 15 | **Interlock Tiles / Curbstone - Roads, Sidewalks, Landscape** |  | 2026-11-05 → 2026-11-11 (+6d) |  |
| A103560 | Prequalification Approval for Interlock Tiles / Curbstone - Roads, Sidewalks, Landscape |  | 2026-11-05 → 2026-11-11 (+6d) | 13.6d → 8.2d |
| 16 | **Landscaping Materials (Soil, Plants) - Final works, softscape** |  | 2026-11-05 → 2026-11-11 (+6d) |  |
| A103580 | Prequalification Approval for Landscaping Materials (Soil, Plants) - Final works, softscape |  | 2026-11-05 → 2026-11-11 (+6d) | -136.9d → -142.3d |
| 20 | **Long Lead Items** |  | 2026-12-28 → 2027-01-04 (+7d) |  |
| 2 | **Drainage Channel Covers (GRP / DI) - For storm and wastewater** |  | 2026-11-01 → 2026-11-08 (+7d) |  |
| A102570 | Custom Clearance for Drainage Channel Covers (GRP / DI) - For storm and wastewater |  | 2026-11-01 → 2026-11-07 (+6d) | -91.91d → -97.31d |
| A1230 | Manufacturing for Drainage Channel Covers (GRP / DI) - For storm and wastewater |  | 2026-11-01 → 2026-11-07 (+6d) | -91.91d → -97.31d |
| A1240 | Delivery for Drainage Channel Covers (GRP / DI) - For storm and wastewater |  | 2026-11-01 → 2026-11-07 (+6d) | -91.91d → -97.31d |
| A102580 | Staging Time for Drainage Channel Covers (GRP / DI) - For storm and wastewater |  | 2026-11-01 → 2026-11-08 (+7d) | -91.91d → -97.31d |
| 3 | **Control & Instrumentation Devices - Flow meters, pressure sensors** |  | 2026-11-26 → 2026-12-03 (+7d) |  |
| A1530 | Manufacturing for Control & Instrumentation Devices - Flow meters, pressure sensors |  | 2026-11-02 → 2026-11-08 (+6d) | -63.95d → -69.35d |
| A102610 | Custom Clearance for Control & Instrumentation Devices - Flow meters, pressure sensors |  | 2026-11-02 → 2026-11-08 (+6d) | -63.95d → -69.35d |
| A1570 | Delivery for Control & Instrumentation Devices - Flow meters, pressure sensors |  | 2026-11-04 → 2026-11-10 (+6d) | -63.95d → -69.35d |
| A102620 | Staging Time for Control & Instrumentation Devices - Flow meters, pressure sensors |  | 2026-11-26 → 2026-12-03 (+7d) | -63.95d → -69.35d |
| 10 | **Pumps (Sewage, Irrigation, Booster) - Especially for pumping stations** |  | 2026-11-04 → 2026-11-11 (+7d) |  |
| A102150 | Manufacturing for Pumps (Sewage, Irrigation, Booster) - Especially for pumping stations |  | 2026-11-01 → 2026-11-07 (+6d) | 20.7d → 18.8d |
| A102170 | Delivery for Pumps (Sewage, Irrigation, Booster) - Especially for pumping stations |  | 2026-11-03 → 2026-11-09 (+6d) | 20.7d → 18.8d |
| A102630 | Custom Clearance for Pumps (Sewage, Irrigation, Booster) - Especially for pumping stations |  | 2026-11-01 → 2026-11-08 (+7d) | 20.7d → 18.8d |
| A102640 | Staging Time for Pumps (Sewage, Irrigation, Booster) - Especially for pumping stations |  | 2026-11-04 → 2026-11-11 (+7d) | 20.7d → 18.8d |
| 13 | **Generators & Fuel Tanks - PS & Control Bldg backup power** |  | 2026-11-23 → 2026-11-30 (+7d) |  |
| A102230 | Manufacturing for Generators & Fuel Tanks - PS & Control Bldg backup power |  | 2026-11-08 → 2026-11-15 (+7d) | -23.21d → -29.21d |
| A102250 | Delivery for Generators & Fuel Tanks - PS & Control Bldg backup power |  | 2026-11-09 → 2026-11-16 (+7d) | -23.21d → -29.21d |
| A102670 | Custom Clearance for Generators & Fuel Tanks - PS & Control Bldg backup power |  | 2026-11-08 → 2026-11-15 (+7d) | -23.21d → -29.21d |
| A102680 | Staging Time for Generators & Fuel Tanks - PS & Control Bldg backup power |  | 2026-11-23 → 2026-11-30 (+7d) | -23.21d → -29.21d |
| 11 | **Odor Control Units - Sewer PS-specific** |  | 2026-12-28 → 2027-01-04 (+7d) |  |
| A102720 | Staging Time for Odor Control Units - Sewer PS-specific | 2026-11-23 → 2026-11-30 (+7d) | 2026-12-28 → 2027-01-04 (+7d) | -23.21d → -29.21d |
| 21 | **Short Lead Items** |  | 2027-03-20 → 2027-03-27 (+7d) |  |
| 1 | **Asphalt** |  | 2026-12-29 → 2027-01-05 (+7d) |  |
| A102730 | Delivery for Asphalt Phase 1 |  | 2026-12-29 → 2027-01-05 (+7d) | 33.58d → 27.58d |
| A103740 | Delivery for Asphalt Phase 2 |  | 2026-12-29 → 2027-01-05 (+7d) | 33.58d → 27.58d |
| A103750 | Delivery for Asphalt Phase 3 |  | 2026-12-29 → 2027-01-05 (+7d) | 77.66d → 71.66d |
| 15 | **Interlock Tiles / Curbstone - Roads, Sidewalks, Landscape** |  | 2026-12-01 → 2026-12-07 (+6d) |  |
| A102380 | Manufacturing for Interlock Tiles / Curbstone - Roads, Sidewalks, Landscape |  | 2026-11-11 → 2026-11-17 (+6d) | 12.6d → 7.2d |
| A102400 | Delivery for Interlock Tiles / Curbstone - Roads, Sidewalks, Landscape |  | 2026-11-11 → 2026-11-18 (+7d) | 12.6d → 7.2d |
| A102820 | Staging Time for Interlock Tiles / Curbstone - Roads, Sidewalks, Landscape |  | 2026-12-01 → 2026-12-07 (+6d) | 12.6d → 7.2d |
| 16 | **Landscaping Materials (Soil, Plants) - Final works, softscape** | 2026-11-12 → 2026-11-18 (+6d) | 2027-03-20 → 2027-03-27 (+7d) |  |
| A102350 | Issue PO for Landscaping Materials (Soil, Plants) - Final works, softscape | 2026-11-12 → 2026-11-18 (+6d) | 2026-11-17 → 2026-11-23 (+6d) | -137.9d → -143.3d |
| A102360 | Manufacturing for Landscaping Materials (Soil, Plants) - Final works, softscape | 2026-11-17 → 2026-11-23 (+6d) | 2027-01-26 → 2027-02-01 (+6d) | -137.9d → -143.3d |
| A102390 | Delivery for Landscaping Materials (Soil, Plants) - Final works, softscape | 2027-01-26 → 2027-02-01 (+6d) | 2027-03-20 → 2027-03-27 (+7d) | -137.9d → -143.3d |

| ID | Task | Start | Finish | Complete | Total float |
| --- | --- | --- | --- | --- | --- |
| 2 | **Sewerage Network Zone 3** |  | 2027-05-19 → 2027-05-26 (+7d) |  |  |
| 3 | **Pipework: Supply, Installation, and Testing** |  | 2026-11-24 → 2026-11-30 (+6d) |  |  |
| 3 | **HDPE Pressure Pipes Installation (250mm–630mm)** |  | 2026-11-24 → 2026-11-30 (+6d) |  |  |
| MOD-SWN-PW-425 | Test (Pressure - Slope) HDPE for Sewerage Network Zone 3 |  | 2026-11-03 → 2026-11-09 (+6d) |  | 118.78d → 112.38d |
| MOD-SWN-PW-435 | Coating / Wrapping HDPE for Sewerage Network Zone 3 |  | 2026-11-09 → 2026-11-15 (+6d) |  | 118.78d → 112.38d |
| MOD-SWN-PW-395 | Backfilling & Warrning Tape HDPE for Sewerage Network Zone 3 | 2026-11-09 → 2026-11-16 (+7d) | 2026-11-24 → 2026-11-30 (+6d) |  | 118.78d → 112.38d |
| 4 | **Fittings and Valves** | 2026-10-31 → 2026-11-07 (+7d) | 2026-12-01 → 2026-12-07 (+6d) |  |  |
| MOD-SWN-FV-55 | Supply & Installation of HDPE Elbows for Sewerage Network Zone 3 | 2026-10-31 → 2026-11-07 (+7d) | 2026-11-07 → 2026-11-12 (+5d) |  | 80.48d → 75.08d |
| MOD-SWN-FV-65 | Gate Valves Installation for Sewerage Network Zone 3 | 2026-11-07 → 2026-11-14 (+7d) | 2026-11-11 → 2026-11-17 (+6d) |  | 80.48d → 75.08d |
| MOD-SWN-FV-75 | Drain Valves Installation for Sewerage Network Zone 3 | 2026-11-11 → 2026-11-18 (+7d) | 2026-11-16 → 2026-11-22 (+6d) |  | 80.48d → 75.08d |
| MOD-SWN-FV-85 | Air Breather & Air Release Valves Installation for Sewerage Network Zone 3 | 2026-11-16 → 2026-11-23 (+7d) | 2026-11-28 → 2026-12-03 (+5d) |  | 80.48d → 75.08d |
| MOD-SWN-FV-95 | Jointing & Piping Accessories Installation for Sewerage Network Zone 3 | 2026-11-28 → 2026-12-05 (+7d) | 2026-12-01 → 2026-12-07 (+6d) |  | 80.48d → 75.08d |
| 6 | **Valve & Flow Meter Chambers** |  | 2027-01-08 → 2027-01-14 (+6d) |  |  |
| 1 | **Valve Chambers Construction** |  | 2026-12-11 → 2026-12-18 (+7d) |  |  |
| MOD-SWN-PW-815 | Excavation Valve Chamber for Sewerage Network Zone 3 |  | 2026-11-07 → 2026-11-14 (+7d) |  | 73.88d → 67.48d |
| MOD-SWN-PW-825 | Lean Concrete / Bedding Valve Chamber for Sewerage Network Zone 3 |  | 2026-11-17 → 2026-11-23 (+6d) |  | 73.88d → 67.48d |
| MOD-SWN-VF-84 | Valve Chambers Construction Valve Chamber for Sewerage Network Zone 3 |  | 2026-11-20 → 2026-11-26 (+6d) |  | 73.88d → 67.48d |
| MOD-SWN-PW-835 | Test Valve Chamber for Sewerage Network Zone 3 |  | 2026-11-26 → 2026-12-03 (+7d) |  | 101.53d → 95.13d |
| MOD-SWN-PW-805 | Backfilling Valve Chamber for Sewerage Network Zone 3 | 2026-11-26 → 2026-12-03 (+7d) | 2026-12-11 → 2026-12-18 (+7d) |  | 101.53d → 95.13d |
| 2 | **Water Drain Chambers Construction** |  | 2026-12-28 → 2027-01-04 (+7d) |  |  |
| MOD-SWN-PW-855 | Excavation Water Drain Chamber for Sewerage Network Zone 3 |  | 2026-11-05 → 2026-11-12 (+7d) |  | 80.78d → 74.38d |
| MOD-SWN-PW-865 | Lean Concrete / Bedding Water Drain Chamber for Sewerage Network Zone 3 |  | 2026-11-13 → 2026-11-19 (+6d) |  | 80.78d → 74.38d |
| MOD-SWN-VF-94 | Water Drain Chambers Construction Water Drain Chamber for Sewerage Network Zone 3 |  | 2026-11-28 → 2026-12-05 (+7d) |  | 73.88d → 67.48d |
| MOD-SWN-PW-875 | Test Water Drain Chamber for Sewerage Network Zone 3 | 2026-11-28 → 2026-12-05 (+7d) | 2026-12-13 → 2026-12-20 (+7d) |  | 84.73d → 78.33d |
| MOD-SWN-PW-845 | Backfilling Water Drain Chamber for Sewerage Network Zone 3 | 2026-12-13 → 2026-12-20 (+7d) | 2026-12-28 → 2027-01-04 (+7d) |  | 84.73d → 78.33d |
| 3 | **Discharge Chambers Construction** |  | 2027-01-03 → 2027-01-09 (+6d) |  |  |
| MOD-SWN-PW-895 | Excavation Discharge Chamber for Sewerage Network Zone 3 |  | 2026-11-07 → 2026-11-14 (+7d) |  | 86.18d → 79.78d |
| MOD-SWN-PW-905 | Lean Concrete / Bedding Discharge Chamber for Sewerage Network Zone 3 |  | 2026-11-16 → 2026-11-22 (+6d) | 60% → 62% | 86.18d → 79.78d |
| MOD-SWN-VF-104 | Discharge Chambers Construction Discharge Chamber for Sewerage Network Zone 3 |  | 2026-12-04 → 2026-12-10 (+6d) | 55% → 59% | 73.88d → 67.48d |
| MOD-SWN-PW-915 | Test Discharge Chamber for Sewerage Network Zone 3 | 2026-12-04 → 2026-12-10 (+6d) | 2026-12-19 → 2026-12-25 (+6d) |  | 78.88d → 72.48d |
| MOD-SWN-PW-885 | Backfilling Discharge Chamber for Sewerage Network Zone 3 | 2026-12-19 → 2026-12-25 (+6d) | 2027-01-03 → 2027-01-09 (+6d) |  | 78.88d → 72.48d |
| 4 | **Flow Meter Chambers Construction** |  | 2027-01-08 → 2027-01-14 (+6d) |  |  |
| MOD-SWN-PW-935 | Excavation Flow Meter Chamber for Sewerage Network Zone 3 |  | 2026-11-08 → 2026-11-15 (+7d) |  | 86.78d → 80.38d |
| MOD-SWN-PW-945 | Lean Concrete / Bedding Flow Meter Chamber for Sewerage Network Zone 3 |  | 2026-11-21 → 2026-11-27 (+6d) |  | 86.78d → 80.38d |
| MOD-SWN-VF-114 | Flow Meter Chambers Construction Flow Meter Chamber for Sewerage Network Zone 3 | 2026-12-04 → 2026-12-10 (+6d) | 2026-12-09 → 2026-12-15 (+6d) |  | 73.88d → 67.48d |
| MOD-SWN-PW-955 | Test Flow Meter Chamber for Sewerage Network Zone 3 | 2026-12-09 → 2026-12-15 (+6d) | 2026-12-24 → 2026-12-30 (+6d) |  | 73.88d → 67.48d |
| MOD-SWN-PW-925 | Backfilling Flow Meter Chamber for Sewerage Network Zone 3 | 2026-12-24 → 2026-12-30 (+6d) | 2027-01-08 → 2027-01-14 (+6d) |  | 73.88d → 67.48d |
| 7 | **Manholes** |  | 2026-12-22 → 2026-12-28 (+6d) |  |  |
| 2 | **1500mm GRP Manholes (Standard & Backdrop)** |  | 2026-12-12 → 2026-12-18 (+6d) |  |  |
| MOD-SWN-PW-1655 | Excavation 1.5m GRP for Sewerage Network Zone 3 |  | 2026-11-02 → 2026-11-09 (+7d) |  | 90.98d → 84.58d |
| MOD-SWN-PW-1665 | Lean Concrete / Bedding 1.5m GRP for Sewerage Network Zone 3 |  | 2026-11-07 → 2026-11-14 (+7d) | 75% → 84% | 90.98d → 84.58d |
| MOD-SWN-MH-195 | 1500mm GRP Manholes (Standard & Backdrop) 1.5m GRP for Sewerage Network Zone 3 |  | 2026-11-12 → 2026-11-18 (+6d) |  | 90.98d → 84.58d |
| MOD-SWN-PW-1675 | Test 1.5m GRP for Sewerage Network Zone 3 | 2026-11-12 → 2026-11-18 (+6d) | 2026-11-27 → 2026-12-03 (+6d) |  | 101.23d → 94.83d |
| MOD-SWN-PW-1645 | Backfilling 1.5m GRP for Sewerage Network Zone 3 | 2026-11-27 → 2026-12-03 (+6d) | 2026-12-12 → 2026-12-18 (+6d) |  | 101.23d → 94.83d |
| 3 | **1800mm GRP Manholes (Standard & Backdrop)** |  | 2026-12-16 → 2026-12-22 (+6d) |  |  |
| MOD-SWN-PW-1695 | Excavation 1.8m GRP for Sewerage Network Zone 3 |  | 2026-11-02 → 2026-11-08 (+6d) |  | 96.65d → 90.25d |
| MOD-SWN-PW-1705 | Lean Concrete / Bedding 1.8m GRP for Sewerage Network Zone 3 |  | 2026-11-06 → 2026-11-12 (+6d) | 80% → 84% | 96.65d → 90.25d |
| MOD-SWN-MH-205 | 1800mm GRP Manholes (Standard & Backdrop) 1.8m GRP for Sewerage Network Zone 3 |  | 2026-11-16 → 2026-11-22 (+6d) | 75% → 80% | 90.98d → 84.58d |
| MOD-SWN-PW-1715 | Test 1.8m GRP for Sewerage Network Zone 3 | 2026-11-16 → 2026-11-22 (+6d) | 2026-12-01 → 2026-12-07 (+6d) |  | 96.98d → 90.58d |
| MOD-SWN-PW-1685 | Backfilling 1.8m GRP for Sewerage Network Zone 3 | 2026-12-01 → 2026-12-07 (+6d) | 2026-12-16 → 2026-12-22 (+6d) |  | 96.98d → 90.58d |
| 4 | **2000mm GRP Manholes (Standard & Backdrop)** |  | 2026-12-22 → 2026-12-28 (+6d) |  |  |
| MOD-SWN-PW-1735 | Excavation 2m GRP for Sewerage Network Zone 3 |  | 2026-11-02 → 2026-11-08 (+6d) |  | 100.06d → 93.66d |
| MOD-SWN-PW-1745 | Lean Concrete / Bedding 2m GRP for Sewerage Network Zone 3 |  | 2026-11-07 → 2026-11-13 (+6d) | 75% → 80% | 100.06d → 93.66d |
| MOD-SWN-MH-215 | 2000mm GRP Manholes (Standard & Backdrop) 2m GRP for Sewerage Network Zone 3 | 2026-11-16 → 2026-06-03 A (-166d) | 2026-11-22 → 2026-11-28 (+6d) | 0% → 60% | 90.98d → 84.58d |
| MOD-SWN-PW-1755 | Test 2m GRP for Sewerage Network Zone 3 | 2026-11-22 → 2026-11-28 (+6d) | 2026-12-07 → 2026-12-13 (+6d) |  | 90.98d → 84.58d |
| MOD-SWN-PW-1725 | Backfilling 2m GRP for Sewerage Network Zone 3 | 2026-12-07 → 2026-12-13 (+6d) | 2026-12-22 → 2026-12-28 (+6d) |  | 90.98d → 84.58d |
| 5 | **Pumping Stations** |  | 2027-05-19 → 2027-05-26 (+7d) |  |  |
| 1 | **Sewage Pumps and MCC System** | 2026-11-23 → 2026-11-30 (+7d) | 2027-01-11 → 2027-01-18 (+7d) |  |  |
| MOD-SWN-PS-644 | Sewage pumps (2x30 l/s, 1x115 l/s) incl. MCC – PS3 for Sewerage Network Zone 3 | 2026-11-23 → 2026-11-30 (+7d) | 2026-12-17 → 2026-12-24 (+7d) |  | 26.79d → 20.79d |
| MOD-SWN-PS-654 | Sewage pumps (2x100 l/s) incl. MCC – PS4 for Sewerage Network Zone 3 | 2026-12-17 → 2026-12-24 (+7d) | 2027-01-11 → 2027-01-18 (+7d) |  | 26.79d → 20.79d |
| 3 | **In-Line Booster Stations** | 2026-10-31 → 2026-11-07 (+7d) | 2027-01-12 → 2027-01-18 (+6d) |  |  |
| MOD-SWN-PS-674 | In-Line Booster Stations - Civil Works for Sewerage Network Zone 3 | 2026-10-31 → 2026-11-07 (+7d) | 2026-11-24 → 2026-11-30 (+6d) |  | 26d → 20.6d |
| MOD-SWN-PS-1144 | In-Line Booster Stations - Mechanical Works for Sewerage Network Zone 3 | 2026-11-24 → 2026-12-01 (+7d) | 2026-12-19 → 2026-12-24 (+5d) |  | 26d → 20.6d |
| MOD-SWN-PS-1154 | In-Line Booster Stations - Electrical Works for Sewerage Network Zone 3 | 2026-12-19 → 2026-12-26 (+7d) | 2027-01-12 → 2027-01-18 (+6d) |  | 26d → 20.6d |
| 7 | **Engine/Motor Control Center Buildings** | 2026-10-31 → 2026-11-07 (+7d) | 2026-11-09 → 2026-11-15 (+6d) |  |  |
| MOD-SWN-PS-934 | MCC Building – PS3 for Sewerage Network Zone 3 | 2026-10-31 → 2026-11-07 (+7d) | 2026-11-01 → 2026-11-07 (+6d) |  | -41.7d → -47.1d |
| MOD-SWN-PS-944 | MCC Building – PS4 for Sewerage Network Zone 3 | 2026-11-01 → 2026-11-08 (+7d) | 2026-11-09 → 2026-11-15 (+6d) |  | -9.3d → -14.7d |
| 4 | **Valves and Fittings (General Supply & Installation)** |  | 2026-12-05 → 2026-12-10 (+5d) |  |  |
| MOD-SWN-PS-714 | Valves, fittings, flow meters – PS3 for Sewerage Network Zone 3 |  | 2026-11-29 → 2026-12-05 (+6d) |  | -63.95d → -69.35d |
| MOD-SWN-PS-724 | Valves, fittings, flow meters – PS4 for Sewerage Network Zone 3 |  | 2026-12-01 → 2026-12-08 (+7d) |  | -63.95d → -69.35d |

| ID | Task | Start | Finish | Total float |
| --- | --- | --- | --- | --- |
| MOD-SWN-PS-734 | 35mm SS 316 mesh network – PS4 for Sewerage Network Zone 3 |  | 2026-12-05 → 2026-12-10 (+5d) | -63.95d → -69.35d |
| 5 | **Tank with Canopy** | 2026-12-05 → 2026-12-10 (+5d) | 2026-12-19 → 2026-12-24 (+5d) |  |
| MOD-SWN-PS-754 | Tank with canopy (per specs/drawings) - PS4 for Sewerage Network Zone 3 | 2026-12-05 → 2026-12-10 (+5d) | 2026-12-19 → 2026-12-24 (+5d) | -63.95d → -69.35d |
| 6 | **Pump Well and Valve Chambers** | 2026-12-19 → 2026-12-24 (+5d) | 2027-04-05 → 2027-04-12 (+7d) |  |
| MOD-SWN-PS-844 | Pump well & valve chamber structure – PS3 (2 wells, 5x5m, 11m depth) for Sewerage Network Zone 3 | 2026-12-19 → 2026-12-24 (+5d) | 2027-01-12 → 2027-01-18 (+6d) | -63.95d → -69.35d |
| MOD-SWN-PS-854 | Concrete wall (5x5x1m) inside PS3 well for Sewerage Network Zone 3 | 2027-01-12 → 2027-01-18 (+6d) | 2027-01-17 → 2027-01-23 (+6d) | -6.65d → -12.05d |
| MOD-SWN-PS-884 | Pump well & valve chamber structure – PS4 (1 well, 4m, 11m depth) for Sewerage Network Zone 3 | 2027-01-12 → 2027-01-18 (+6d) | 2027-02-07 → 2027-02-17 (+10d) | -63.95d → -69.35d |
| MOD-SWN-PS-864 | Valve chamber – PS3 for Sewerage Network Zone 3 | 2027-01-17 → 2027-01-23 (+6d) | 2027-02-10 → 2027-02-21 (+11d) | -6.65d → -12.05d |
| MOD-SWN-PS-894 | Valve chamber – PS4 for Sewerage Network Zone 3 | 2027-02-07 → 2027-02-17 (+10d) | 2027-03-21 → 2027-03-28 (+7d) | -63.95d → -69.35d |
| MOD-SWN-PS-874 | Flow meter chamber – PS3 for Sewerage Network Zone 3 | 2027-02-10 → 2027-02-21 (+11d) | 2027-03-01 → 2027-03-16 (+15d) | -6.65d → -12.05d |
| MOD-SWN-PS-904 | Flow meter chamber – PS4 for Sewerage Network Zone 3 | 2027-03-21 → 2027-03-28 (+7d) | 2027-04-05 → 2027-04-12 (+7d) | -63.95d → -69.35d |
| 8 | **Odor Control System Base/Plinth** | 2027-05-06 → 2027-05-18 (+12d) | 2027-05-18 → 2027-05-25 (+7d) |  |
| MOD-SWN-PS-954 | Concrete plinth below odor control – PS3 & PS4 for Sewerage Network Zone 3 | 2027-05-06 → 2027-05-18 (+12d) | 2027-05-18 → 2027-05-25 (+7d) | -63.95d → -69.35d |
| 10 | **Lighting Works** |  | 2027-05-19 → 2027-05-26 (+7d) |  |
| MOD-SWN-PS-1024 | 250W Flood Light installation – PS3 & PS4 for Sewerage Network Zone 3 |  | 2027-05-19 → 2027-05-26 (+7d) | -63.95d → -69.35d |
| 11 | **Duct Works** | 2027-04-05 → 2027-04-12 (+7d) | 2027-04-13 → 2027-04-20 (+7d) |  |
| MOD-SWN-PS-1034 | uPVC duct Track 1 – PS3 & PS4 for Sewerage Network Zone 3 | 2027-04-05 → 2027-04-12 (+7d) | 2027-04-06 → 2027-04-13 (+7d) | -63.95d → -69.35d |
| MOD-SWN-PS-1044 | uPVC duct Track 2 – PS3 & PS4 for Sewerage Network Zone 3 | 2027-04-06 → 2027-04-13 (+7d) | 2027-04-08 → 2027-04-15 (+7d) | -63.95d → -69.35d |
| MOD-SWN-PS-1054 | uPVC duct Track 8 – PS3 & PS4 for Sewerage Network Zone 3 | 2027-04-08 → 2027-04-15 (+7d) | 2027-04-13 → 2027-04-20 (+7d) | -63.95d → -69.35d |
| 12 | **Grounding Works** | 2027-04-13 → 2027-04-20 (+7d) | 2027-04-17 → 2027-04-24 (+7d) |  |
| MOD-SWN-PS-1064 | Grounding pit – PS3 & PS4 for Sewerage Network Zone 3 | 2027-04-13 → 2027-04-20 (+7d) | 2027-04-14 → 2027-04-21 (+7d) | -63.95d → -69.35d |
| MOD-SWN-PS-1074 | 600x600 Cable pull pit – PS3 & PS4 for Sewerage Network Zone 3 | 2027-04-14 → 2027-04-21 (+7d) | 2027-04-17 → 2027-04-24 (+7d) | -63.95d → -69.35d |
| 13 | **Landscaping / Interlocking Tiles** | 2027-04-17 → 2027-04-24 (+7d) | 2027-05-11 → 2027-05-23 (+12d) |  |
| MOD-SWN-PS-1084 | Building perimeter interlock tiles for Sewerage Network Zone 3 | 2027-04-17 → 2027-04-24 (+7d) | 2027-05-06 → 2027-05-18 (+12d) | -63.95d → -69.35d |
| MOD-SWN-PS-1094 | Entrance road paving tiles for Sewerage Network Zone 3 | 2027-05-06 → 2027-05-18 (+12d) | 2027-05-11 → 2027-05-23 (+12d) | -60.65d → -66.05d |
| 14 | **Pumping Station Internal Drainage Network** | 2027-04-17 → 2027-04-24 (+7d) | 2027-04-25 → 2027-05-02 (+7d) |  |
| MOD-SWN-PS-1104 | Internal surface drainage channels for Sewerage Network Zone 3 | 2027-04-17 → 2027-04-24 (+7d) | 2027-04-25 → 2027-05-02 (+7d) | -46.65d → -52.05d |
| 14 | **Rainwater Drainage Network Zone 3** |  | 2026-12-26 → 2026-12-31 (+5d) |  |
| 1 | **Pipe Laying Works** |  | 2026-11-29 → 2026-12-06 (+7d) |  |
| 2 | **Supply & Installation of uPVC Pipes (250–300mm dia)** |  | 2026-11-07 → 2026-11-13 (+6d) |  |
| MOD-RWN-PL-233 | Excavation to required depth UPVC for Rainwater Drainage Network Zone 3 |  | 2026-11-01 → 2026-11-08 (+7d) | -125.71d → -132.11d |
| MOD-RWN-PL-243 | Lean Concrete / Bedding UPVC for Rainwater Drainage Network Zone 3 |  | 2026-11-01 → 2026-11-08 (+7d) | -125.71d → -132.11d |
| MOD-RWN-PL-253 | Laying of uPVC pipe UPVC for Rainwater Drainage Network Zone 3 |  | 2026-11-02 → 2026-11-09 (+7d) | -125.71d → -132.11d |
| MOD-RWN-PL-283 | Test (Pressure-slope) UPVC for Rainwater Drainage Network Zone 3 |  | 2026-11-03 → 2026-11-09 (+6d) | -125.71d → -132.11d |
| MOD-RWN-PL-263 | Coating / Wrapping UPVC for Rainwater Drainage Network Zone 3 |  | 2026-11-03 → 2026-11-10 (+7d) | -99.91d → -106.31d |
| MOD-RWN-PL-293 | Backfilling & Warning Tape UPVC for Rainwater Drainage Network Zone 3 |  | 2026-11-07 → 2026-11-13 (+6d) | -103.51d → -109.91d |
| 3 | **Supply & Installation of GRP Pipes (350–800mm dia)** |  | 2026-11-06 → 2026-11-12 (+6d) |  |
| MOD-RWN-PL-343 | Test (Pressure-slope) GRP for Rainwater Drainage Network Zone 3 |  | 2026-11-06 → 2026-11-12 (+6d) | -102.16d → -108.56d |
| 4 | **uPVC Connection Pipes (150mm dia)** |  | 2026-11-29 → 2026-12-06 (+7d) |  |
| MOD-RWN-PL-373 | Excavate short trench paths UPVC Con. for Rainwater Drainage Network Zone 3 |  | 2026-10-31 → 2026-11-07 (+7d) | -123.89d → -130.29d |
| MOD-RWN-PL-383 | Lean Concrete / bedding material UPVC Con. for Rainwater Drainage Network Zone 3 |  | 2026-11-01 → 2026-11-07 (+6d) | -123.89d → -130.29d |
| MOD-RWN-PL-393 | Lay & connect UPVC Con. for Rainwater Drainage Network Zone 3 |  | 2026-11-03 → 2026-11-10 (+7d) | -125.71d → -132.11d |
| MOD-RWN-PL-403 | Test (Pressure-slope) UPVC Con. for Rainwater Drainage Network Zone 3 | 2026-11-03 → 2026-11-10 (+7d) | 2026-11-06 → 2026-11-13 (+7d) | -125.71d → -132.11d |
| MOD-RWN-PL-723 | Coating / Wrapping UPVC Con. for Rainwater Drainage Network Zone 3 | 2026-11-06 → 2026-11-13 (+7d) | 2026-11-27 → 2026-12-04 (+7d) | -125.71d → -132.11d |
| MOD-RWN-PL-413 | Backfilling & compaction UPVC Con. for Rainwater Drainage Network Zone 3 | 2026-11-27 → 2026-12-04 (+7d) | 2026-11-29 → 2026-12-06 (+7d) | -125.71d → -132.11d |
| 5 | **Precast Concrete Box Culverts** |  | 2026-12-26 → 2026-12-31 (+5d) |  |
| 1 | **Box Culverts (500x500mm to 3500x800mm)** |  | 2026-12-26 → 2026-12-31 (+5d) |  |
| MOD-RWN-PC-254 | Dewatering and trench shoring Box culvert for Rainwater Drainage Network Zone 3 |  | 2026-11-09 → 2026-11-15 (+6d) | -129.16d → -134.56d |
| MOD-RWN-PC-264 | Bedding preparation (gravel/lean concrete) Box culvert for Rainwater Drainage Network Zone 3 | 2026-11-09 → 2026-11-15 (+6d) | 2026-11-14 → 2026-11-19 (+5d) | -129.16d → -134.56d |
| MOD-RWN-PC-274 | Installation of box culvert units Box culvert for Rainwater Drainage Network Zone 3 | 2026-11-14 → 2026-11-19 (+5d) | 2026-11-25 → 2026-12-01 (+6d) | -129.16d → -134.56d |
| MOD-RWN-PC-284 | Alignment and joint sealing Box culvert for Rainwater Drainage Network Zone 3 | 2026-11-25 → 2026-12-01 (+6d) | 2026-11-30 → 2026-12-06 (+6d) | -129.16d → -134.56d |
| MOD-RWN-PC-294 | Construct headwalls/wing walls (if needed) Box culvert for Rainwater Drainage Network Zone 3 | 2026-11-30 → 2026-12-06 (+6d) | 2026-12-14 → 2026-12-20 (+6d) | -129.16d → -134.56d |
| MOD-RWN-PC-304 | Backfilling and compaction Box culvert for Rainwater Drainage Network Zone 3 | 2026-12-14 → 2026-12-20 (+6d) | 2026-12-22 → 2026-12-28 (+6d) | -129.16d → -134.56d |
| MOD-RWN-PC-314 | Surface finishing Box culvert for Rainwater Drainage Network Zone 3 | 2026-12-22 → 2026-12-28 (+6d) | 2026-12-26 → 2026-12-31 (+5d) | -129.16d → -134.56d |
| 4 | **Manholes** | 2026-11-14 → 2026-11-19 (+5d) | 2026-12-26 → 2026-12-31 (+5d) |  |
| 1 | **Circular GRP Manholes (1200–1800mm dia)** | 2026-11-14 → 2026-11-19 (+5d) | 2026-12-21 → 2026-12-27 (+6d) |  |
| MOD-RWN-MH-234 | Excavate to full manhole depth Circular Manhole for Rainwater Drainage Network Zone 3 | 2026-11-14 → 2026-11-19 (+5d) | 2026-11-22 → 2026-11-28 (+6d) | -125.16d → -130.56d |
| MOD-RWN-MH-244 | Dewatering and safety barriers Circular Manhole for Rainwater Drainage Network Zone 3 | 2026-11-22 → 2026-11-28 (+6d) | 2026-11-29 → 2026-12-05 (+6d) | -125.16d → -130.56d |
| MOD-RWN-MH-254 | Concrete base construction Circular Manhole for Rainwater Drainage Network Zone 3 | 2026-11-29 → 2026-12-05 (+6d) | 2026-12-01 → 2026-12-07 (+6d) | -125.16d → -130.56d |
| MOD-RWN-MH-264 | Install GRP manhole shaft sections Circular Manhole for Rainwater Drainage Network Zone 3 | 2026-12-01 → 2026-12-07 (+6d) | 2026-12-09 → 2026-12-15 (+6d) | -125.16d → -130.56d |
| MOD-RWN-MH-274 | Place slab and cover frame Circular Manhole for Rainwater Drainage Network Zone 3 | 2026-12-09 → 2026-12-15 (+6d) | 2026-12-16 → 2026-12-22 (+6d) | -125.16d → -130.56d |
| MOD-RWN-MH-284 | Waterproofing Circular Manhole for Rainwater Drainage Network Zone 3 | 2026-12-16 → 2026-12-22 (+6d) | 2026-12-19 → 2026-12-24 (+5d) | -125.16d → -130.56d |
| MOD-RWN-MH-294 | Backfilling and compaction Circular Manhole for Rainwater Drainage Network Zone 3 | 2026-12-19 → 2026-12-24 (+5d) | 2026-12-21 → 2026-12-27 (+6d) | -125.16d → -130.56d |
| 3 | **Concrete Manholes for 1500x1500 Box Pipes** | 2026-11-14 → 2026-11-19 (+5d) | 2026-12-21 → 2026-12-27 (+6d) |  |
| MOD-RWN-MH-374 | Excavation Concrete Manhole 1.5x1.5 for Rainwater Drainage Network Zone 3 | 2026-11-14 → 2026-11-19 (+5d) | 2026-11-21 → 2026-11-26 (+5d) | -125.16d → -130.56d |
| MOD-RWN-MH-384 | Base slab and wall shuttering Concrete Manhole 1.5x1.5 for Rainwater Drainage Network Zone 3 | 2026-11-21 → 2026-11-26 (+5d) | 2026-11-25 → 2026-12-01 (+6d) | -125.16d → -130.56d |
| MOD-RWN-MH-394 | Wall reinforcement and casting Concrete Manhole 1.5x1.5 for Rainwater Drainage Network Zone 3 | 2026-11-25 → 2026-12-01 (+6d) | 2026-12-05 → 2026-12-10 (+5d) | -125.16d → -130.56d |
| MOD-RWN-MH-404 | Roof slab with openings Concrete Manhole 1.5x1.5 for Rainwater Drainage Network Zone 3 | 2026-12-05 → 2026-12-10 (+5d) | 2026-12-09 → 2026-12-15 (+6d) | -125.16d → -130.56d |
| MOD-RWN-MH-414 | Masonry/benching works inside Concrete Manhole 1.5x1.5 for Rainwater Drainage Network Zone 3 | 2026-12-09 → 2026-12-15 (+6d) | 2026-12-15 → 2026-12-21 (+6d) | -125.16d → -130.56d |
| MOD-RWN-MH-424 | Install cover and frame Concrete Manhole 1.5x1.5 for Rainwater Drainage Network Zone 3 | 2026-12-15 → 2026-12-21 (+6d) | 2026-12-17 → 2026-12-23 (+6d) | -125.16d → -130.56d |

| ID | Task | Start | Finish | Complete | Total float |
| --- | --- | --- | --- | --- | --- |
| MOD-RWN-MH-434 | Backfill in layers Concrete Manhole 1.5x1.5 for Rainwater Drainage Network Zone 3 | 2026-12-17 → 2026-12-23 (+6d) | 2026-12-21 → 2026-12-27 (+6d) |  | -125.16d → -130.56d |
| 2 | **Concrete Manholes for 1000x1000 Box Pipes** | 2026-11-14 → 2026-11-19 (+5d) | 2026-12-26 → 2026-12-31 (+5d) |  |  |
| MOD-RWN-MH-304 | Excavation Concrete Manhole 1x1 for Rainwater Drainage Network Zone 3 | 2026-11-14 → 2026-11-19 (+5d) | 2026-11-21 → 2026-11-26 (+5d) |  | -129.16d → -134.56d |
| MOD-RWN-MH-314 | Base slab and wall shuttering Concrete Manhole 1x1 for Rainwater Drainage Network Zone 3 | 2026-11-21 → 2026-11-26 (+5d) | 2026-11-25 → 2026-12-01 (+6d) |  | -129.16d → -134.56d |
| MOD-RWN-MH-324 | Wall reinforcement and casting Concrete Manhole 1x1 for Rainwater Drainage Network Zone 3 | 2026-11-25 → 2026-12-01 (+6d) | 2026-12-02 → 2026-12-08 (+6d) |  | -129.16d → -134.56d |
| MOD-RWN-MH-334 | Roof slab with openings Concrete Manhole 1x1 for Rainwater Drainage Network Zone 3 | 2026-12-02 → 2026-12-08 (+6d) | 2026-12-07 → 2026-12-13 (+6d) |  | -129.16d → -134.56d |
| MOD-RWN-MH-344 | Masonry/benching works inside Concrete Manhole 1x1 for Rainwater Drainage Network Zone 3 | 2026-12-07 → 2026-12-13 (+6d) | 2026-12-15 → 2026-12-21 (+6d) |  | -129.16d → -134.56d |
| MOD-RWN-MH-354 | Install cover and frame Concrete Manhole 1x1 for Rainwater Drainage Network Zone 3 | 2026-12-15 → 2026-12-21 (+6d) | 2026-12-20 → 2026-12-26 (+6d) |  | -129.16d → -134.56d |
| MOD-RWN-MH-364 | Backfill in layers Concrete Manhole 1x1 for Rainwater Drainage Network Zone 3 | 2026-12-20 → 2026-12-26 (+6d) | 2026-12-26 → 2026-12-31 (+5d) |  | -129.16d → -134.56d |
| 2 | **Chambers and Catch Basins** |  | 2026-11-17 → 2026-11-24 (+7d) |  |  |
| 1 | **Gully Outfalls** |  | 2026-11-15 → 2026-11-21 (+6d) |  |  |
| MOD-RWN-CC-198 | Provide slope protection (riprap) Gully Outfall for Rainwater Drainage Network Zone 3 |  | 2026-11-14 → 2026-11-19 (+5d) |  | -94.32d → -99.72d |
| MOD-RWN-CC-208 | Compact and shape terrain Gully Outfall for Rainwater Drainage Network Zone 3 |  | 2026-11-15 → 2026-11-21 (+6d) |  | -94.32d → -99.72d |
| 2 | **Rainwater Catch Basins** |  | 2026-11-14 → 2026-11-19 (+5d) |  |  |
| MOD-RWN-CC-258 | Backfill and surface finish Catch Basin for Rainwater Drainage Network Zone 3 |  | 2026-11-14 → 2026-11-19 (+5d) |  | -93.26d → -98.66d |
| 3 | **Precast Chambers for Absorption Pits** |  | 2026-11-17 → 2026-11-24 (+7d) |  |  |
| MOD-RWN-CC-308 | Backfill and compact Absorption Pit for Rainwater Drainage Network Zone 3 |  | 2026-11-17 → 2026-11-24 (+7d) |  | -97.01d → -102.41d |
| 3 | **Gully Outfalls to Swales** |  | 2026-12-05 → 2026-12-10 (+5d) |  |  |
| 1 | **Gully Outfalls to Swales** |  | 2026-11-18 → 2026-11-24 (+6d) |  |  |
| MOD-RWN-GO-111 | Excavate outfall channel Gully Outfall to Swales for Rainwater Drainage Network Zone 3 |  | 2026-11-14 → 2026-11-19 (+5d) |  | -97.16d → -102.56d |
| MOD-RWN-GO-121 | Place concrete apron or pipes Gully Outfall to Swales for Rainwater Drainage Network Zone 3 |  | 2026-11-15 → 2026-11-21 (+6d) |  | -97.16d → -102.56d |
| MOD-RWN-GO-131 | Provide slope protection (riprap) Gully Outfall to Swales for Rainwater Drainage Network Zone 3 |  | 2026-11-16 → 2026-11-22 (+6d) |  | -97.16d → -102.56d |
| MOD-RWN-GO-141 | Compact and shape terrain Gully Outfall to Swales for Rainwater Drainage Network Zone 3 | 2026-11-16 → 2026-11-22 (+6d) | 2026-11-18 → 2026-11-24 (+6d) |  | -97.16d → -102.56d |
| 2 | **Riprap Works & Protection** | 2026-11-14 → 2026-11-19 (+5d) | 2026-12-05 → 2026-12-10 (+5d) |  |  |
| MOD-RWN-GO-151 | Lay filter fabric/membrane for Rainwater Drainage Network Zone 3 | 2026-11-14 → 2026-11-19 (+5d) | 2026-11-17 → 2026-11-23 (+6d) |  | -111.16d → -116.56d |
| MOD-RWN-GO-161 | Place riprap/stone layer for Rainwater Drainage Network Zone 3 | 2026-11-17 → 2026-11-23 (+6d) | 2026-11-29 → 2026-12-05 (+6d) |  | -111.16d → -116.56d |
| MOD-RWN-GO-171 | Compact edges for Rainwater Drainage Network Zone 3 | 2026-11-29 → 2026-12-05 (+6d) | 2026-12-02 → 2026-12-08 (+6d) |  | -111.16d → -116.56d |
| MOD-RWN-GO-181 | Ensure hydraulic flow direction for Rainwater Drainage Network Zone 3 | 2026-12-02 → 2026-12-08 (+6d) | 2026-12-05 → 2026-12-10 (+5d) |  | -111.16d → -116.56d |
| 6 | **Backfilling & Bedding** |  | 2026-11-24 → 2026-11-30 (+6d) |  |  |
| 1 | **Backfilling Materials (Type A – 201–700mm Pipes)** |  | 2026-11-02 → 2026-11-08 (+6d) |  |  |
| MOD-RWN-BB-112 | Place granular bedding under pipe for Rainwater Drainage Network Zone 3 |  | 2026-10-31 → 2026-11-07 (+7d) |  | -83.25d → -88.65d |
| MOD-RWN-BB-122 | Lay and align pipe for Rainwater Drainage Network Zone 3 |  | 2026-11-01 → 2026-11-07 (+6d) |  | -83.25d → -88.65d |
| MOD-RWN-BB-132 | Backfill up to spring line for Rainwater Drainage Network Zone 3 |  | 2026-11-01 → 2026-11-08 (+7d) |  | -83.25d → -88.65d |
| MOD-RWN-BB-142 | Compact layer-wise for Rainwater Drainage Network Zone 3 |  | 2026-11-02 → 2026-11-08 (+6d) |  | -83.25d → -88.65d |
| MOD-RWN-BB-152 | Final fill to subgrade level for Rainwater Drainage Network Zone 3 |  | 2026-11-02 → 2026-11-08 (+6d) |  | -83.25d → -88.65d |
| 2 | **Gravel Bedding & Filter Cloth for uPVC Drain Pipes** |  | 2026-11-24 → 2026-11-30 (+6d) |  |  |
| MOD-RWN-BB-162 | Line trench with filter cloth for Rainwater Drainage Network Zone 3 |  | 2026-11-01 → 2026-11-07 (+6d) |  | -102.16d → -107.56d |
| MOD-RWN-BB-172 | Place and compact gravel bedding for Rainwater Drainage Network Zone 3 |  | 2026-11-02 → 2026-11-08 (+6d) |  | -102.16d → -107.56d |
| MOD-RWN-BB-182 | Lay pipe within gravel zone for Rainwater Drainage Network Zone 3 |  | 2026-11-04 → 2026-11-10 (+6d) |  | -102.16d → -107.56d |
| MOD-RWN-BB-192 | Wrap filter cloth above pipe for Rainwater Drainage Network Zone 3 |  | 2026-11-10 → 2026-11-16 (+6d) |  | -102.16d → -107.56d |
| MOD-RWN-BB-202 | Final fill and trench restoration for Rainwater Drainage Network Zone 3 | 2026-11-10 → 2026-11-16 (+6d) | 2026-11-24 → 2026-11-30 (+6d) |  | -102.16d → -107.56d |
| 7 | **Deep Basin for Groundwater Collection (2.5–3.0m)** |  | 2026-11-24 → 2026-11-30 (+6d) |  |  |
| MOD-RWN-DB-002 | Base and side wall construction (cast-in-situ or precast) for Rainwater Drainage Network Zone 3 |  | 2026-11-02 → 2026-11-08 (+6d) |  | -102.31d → -107.71d |
| MOD-RWN-DB-003 | Pipe connections for inflow for Rainwater Drainage Network Zone 3 |  | 2026-11-04 → 2026-11-10 (+6d) |  | -102.31d → -107.71d |
| MOD-RWN-DB-004 | Cover slab and access shaft for Rainwater Drainage Network Zone 3 |  | 2026-11-07 → 2026-11-14 (+7d) |  | -102.31d → -107.71d |
| MOD-RWN-DB-005 | Waterproofing & sealant for Rainwater Drainage Network Zone 3 |  | 2026-11-16 → 2026-11-22 (+6d) | 25% → 40% | -102.31d → -107.71d |
| MOD-RWN-DB-006 | Backfill in controlled layers for Rainwater Drainage Network Zone 3 | 2026-11-16 → 2026-11-22 (+6d) | 2026-11-24 → 2026-11-30 (+6d) |  | -102.31d → -107.71d |
| 13 | **Potable Water Network Zone 3** |  | 2027-01-19 → 2027-01-26 (+7d) |  |  |
| 13 | **Pipe Installation Works** |  | 2026-11-10 → 2026-11-17 (+7d) |  |  |
| MOD-PWN-PI-323 | Lean Concrete / Pipe Bedding Preparation for Potable Water Network Zone 3 |  | 2026-11-01 → 2026-11-08 (+7d) |  | 50.55d → 44.15d |
| MOD-PWN-PI-333 | HDPE Pipe Laying (200 mm to 710 mm) for Potable Water Network Zone 3 |  | 2026-11-05 → 2026-11-12 (+7d) |  | 50.55d → 44.15d |
| MOD-PWN-PI-343 | Test (Pressure-slope) for Potable Water Network Zone 3 |  | 2026-11-07 → 2026-11-13 (+6d) |  | 50.55d → 44.15d |
| MOD-PWN-PI-353 | Coating / Wrapping for Potable Water Network Zone 3 |  | 2026-11-09 → 2026-11-15 (+6d) |  | 50.55d → 44.15d |
| MOD-PWN-PI-363 | Backfilling & Warrning Tape for Potable Water Network Zone 3 |  | 2026-11-10 → 2026-11-17 (+7d) |  | 50.55d → 44.15d |
| 2 | **Valve Installation & Chambers** |  | 2026-11-21 → 2026-11-28 (+7d) |  |  |
| MOD-PWN-VC-87 | Butterfly Valves (355, 500, 630 mm) for Potable Water Network Zone 3 |  | 2026-10-31 → 2026-11-07 (+7d) |  | 34.73d → 29.33d |
| MOD-PWN-VC-97 | 3-exit (2 x 2.5-inch and 1 x 4-inch) dry vacuum cylinder detachable fire nozzle for Potable Water Network Zone 3 |  | 2026-10-31 → 2026-11-07 (+7d) |  | 34.73d → 29.33d |
| MOD-PWN-VC-107 | Valve Chamber Excavation for Potable Water Network Zone 3 |  | 2026-10-31 → 2026-11-07 (+7d) | 98% → 99% | 34.56d → 29.26d |
| MOD-PWN-VC-117 | RC Slab, Walls, or Precast Chambers for Potable Water Network Zone 3 |  | 2026-10-31 → 2026-11-07 (+7d) |  | 34.56d → 29.26d |
| MOD-PWN-VC-77 | Gate Valves (225–710 mm) for Potable Water Network Zone 3 |  | 2026-10-31 → 2026-11-07 (+7d) |  | 34.73d → 29.33d |
| MOD-PWN-VC-127 | Fixing Covers, Gratings, Frames for Potable Water Network Zone 3 |  | 2026-11-14 → 2026-11-21 (+7d) |  | 34.56d → 29.26d |
| MOD-PWN-VC-137 | Tagging & Painting for Potable Water Network Zone 3 | 2026-11-14 → 2026-11-21 (+7d) | 2026-11-21 → 2026-11-28 (+7d) |  | 34.56d → 29.26d |
| 3 | **Flow Meter Installation** |  | 2026-12-12 → 2026-12-19 (+7d) |  |  |
| MOD-PWN-FM-55 | Chamber Excavation (280 mm, 300 mm, 500 mm, 800 mm) for Potable Water Network Zone 3 |  | 2026-11-01 → 2026-11-07 (+6d) |  | 35.8d → 30.5d |
| MOD-PWN-FM-65 | RC or Precast Chamber Construction for Potable Water Network Zone 3 |  | 2026-11-04 → 2026-11-11 (+7d) |  | 35.8d → 30.5d |
| MOD-PWN-FM-75 | Flowmeter Installation & Pipe Integration for Potable Water Network Zone 3 |  | 2026-12-02 → 2026-12-09 (+7d) |  | 16.75d → 11.35d |
| MOD-PWN-FM-85 | Wiring/Cabling if applicable for Potable Water Network Zone 3 |  | 2026-12-08 → 2026-12-15 (+7d) |  | 16.75d → 11.35d |
| MOD-PWN-FM-95 | Calibration & Commissioning for Potable Water Network Zone 3 | 2026-12-08 → 2026-12-15 (+7d) | 2026-12-12 → 2026-12-19 (+7d) |  | 16.75d → 11.35d |
| 4 | **Washout & Air Valve Chambers** |  | 2026-11-05 → 2026-11-12 (+7d) |  |  |
| MOD-PWN-WA-87 | RC Blinding + Base + Walls for Potable Water Network Zone 3 |  | 2026-10-31 → 2026-11-07 (+7d) |  | 47.65d → 42.25d |

| ID | Task | Start | Finish | Complete | Total float |
| --- | --- | --- | --- | --- | --- |
| MOD-PWN-WA-97 | Pipe Work for Potable Water Network Zone 3 |  | 2026-11-02 → 2026-11-08 (+6d) |  | 47.65d → 42.25d |
| MOD-PWN-WA-107 | Washout (Valve + Outlet) Installation for Potable Water Network Zone 3 |  | 2026-11-02 → 2026-11-09 (+7d) |  | 47.65d → 42.25d |
| MOD-PWN-WA-117 | Air Valve Rooms (Valve + Outlet) Installation for Potable Water Network Zone 3 |  | 2026-11-03 → 2026-11-09 (+6d) |  | 47.65d → 42.25d |
| MOD-PWN-WA-127 | Covers, Ladders & Tags for Potable Water Network Zone 3 |  | 2026-11-03 → 2026-11-10 (+7d) |  | 47.65d → 42.25d |
| MOD-PWN-WA-137 | Backfilling & Final Finishing for Potable Water Network Zone 3 | 2026-11-03 → 2026-11-10 (+7d) | 2026-11-05 → 2026-11-12 (+7d) |  | 47.65d → 42.25d |
| 5 | **Pumping Station (Structure & Civil Works)** | 2026-10-31 → 2026-11-07 (+7d) | 2027-01-16 → 2027-01-21 (+5d) |  |  |
| MOD-PWN-PS-66 | Excavation & Blinding for Potable Water Network Zone 3 | 2026-10-31 → 2026-11-07 (+7d) | 2026-11-11 → 2026-11-17 (+6d) |  | -16.4d → -21.8d |
| MOD-PWN-PS-76 | Reinforced Concrete/GRP Shell Construction for Potable Water Network Zone 3 | 2026-11-11 → 2026-11-18 (+7d) | 2026-11-21 → 2026-11-26 (+5d) |  | -16.4d → -21.8d |
| MOD-PWN-PS-86 | Access Ladders, Tight Cover, Surface Guttering for Potable Water Network Zone 3 | 2026-11-21 → 2026-11-28 (+7d) | 2026-11-26 → 2026-12-02 (+6d) |  | -16.4d → -21.8d |
| MOD-PWN-PS-96 | Internal piping & embedded sleeves for Potable Water Network Zone 3 | 2026-11-26 → 2026-12-03 (+7d) | 2026-12-12 → 2026-12-17 (+5d) |  | -16.4d → -21.8d |
| MOD-PWN-PS-106 | Pump Base Pads + Grouting for Potable Water Network Zone 3 | 2026-12-12 → 2026-12-19 (+7d) | 2026-12-27 → 2027-01-02 (+6d) |  | -13.2d → -18.6d |
| MOD-PWN-PS-116 | Backfilling & External Finishes for Potable Water Network Zone 3 | 2026-12-27 → 2027-01-03 (+7d) | 2027-01-16 → 2027-01-21 (+5d) |  | -13.2d → -18.6d |
| 6 | **Pump Station Building** | 2026-12-12 → 2026-12-19 (+7d) | 2027-01-17 → 2027-01-23 (+6d) |  |  |
| MOD-PWN-PB-33 | Structure Construction (as per architectural drawings) for Potable Water Network Zone 3 | 2026-12-12 → 2026-12-19 (+7d) | 2026-12-27 → 2027-01-02 (+6d) |  | -16.4d → -21.8d |
| MOD-PWN-PB-43 | 5-ton Hoist Installation for Potable Water Network Zone 3 | 2026-12-27 → 2027-01-03 (+7d) | 2027-01-02 → 2027-01-07 (+5d) |  | -16.4d → -21.8d |
| MOD-PWN-PB-53 | Finishes, Doors, Ventilation for Potable Water Network Zone 3 | 2027-01-02 → 2027-01-09 (+7d) | 2027-01-17 → 2027-01-23 (+6d) |  | -16.4d → -21.8d |
| 7 | **Pumping Equipment & Fire Systems** | 2026-12-12 → 2026-09-01 (-102d) | 2027-01-13 → 2027-01-14 (+1d) |  |  |
| MOD-PWN-PE-88 | Main Pumps (250 kW, 295 L/s @ 60 m head) for Potable Water Network Zone 3 | 2026-12-12 → 2026-09-01 A (-102d) | 2026-12-28 → 2026-12-30 (+2d) | 0% → 25% | -11.2d → -13.1d |
| MOD-PWN-PE-98 | Electric Fire Water Pump (64 L/s @ 60 m) for Potable Water Network Zone 3 | 2026-12-28 → 2026-09-14 A (-105d) |  | 0% → 25% | -11.2d → -12.1d |
| MOD-PWN-PE-108 | Diesel Fire Water Pump (64 L/s @ 60 m) for Potable Water Network Zone 3 | 2026-12-28 → 2026-09-23 A (-96d) |  | 0% → 25% | -11.2d → -12.1d |
| MOD-PWN-PE-118 | Electric Jockey Pump for Potable Water Network Zone 3 | 2026-12-28 → 2026-09-23 A (-96d) |  | 0% → 25% | -11.2d → -12.1d |
| MOD-PWN-PE-128 | Submersible Fire Pumps (2 pcs, 10 L/s @ 10 m) for Potable Water Network Zone 3 | 2026-12-28 → 2026-09-30 A (-89d) | 2027-01-02 → 2027-01-03 (+1d) | 0% → 25% | -11.2d → -12.1d |
| MOD-PWN-PE-138 | Pipework connections within Pump Room for Potable Water Network Zone 3 | 2027-01-02 → 2027-01-03 (+1d) | 2027-01-07 → 2027-01-09 (+2d) |  | -11.2d → -12.1d |
| MOD-PWN-PE-148 | MCC & DB panel installation for Potable Water Network Zone 3 | 2027-01-07 → 2027-01-09 (+2d) | 2027-01-10 → 2027-01-11 (+1d) |  | -11.2d → -12.1d |
| MOD-PWN-PE-158 | Flow meter on 800mm pipe including flow meter chamber and 2-2.5m depth for Potable Water Network Zone 3 | 2027-01-10 → 2027-01-11 (+1d) | 2027-01-13 → 2027-01-14 (+1d) |  | -11.2d → -12.1d |
| 8 | **Surge Protection** | 2027-01-07 → 2027-01-09 (+2d) | 2027-01-13 → 2027-01-14 (+1d) |  |  |
| MOD-PWN-SP-22 | Surge Vessel Installation for Potable Water Network Zone 3 | 2027-01-07 → 2027-01-09 (+2d) | 2027-01-12 → 2027-01-13 (+1d) |  | -11.2d → -12.1d |
| MOD-PWN-SP-32 | Pipe Integration as per Surge Analysis for Potable Water Network Zone 3 | 2027-01-12 → 2027-01-13 (+1d) | 2027-01-13 → 2027-01-14 (+1d) |  | -11.2d → -12.1d |
| 9 | **Power & Generator System** | 2026-12-28 → 2026-12-30 (+2d) | 2027-01-11 → 2027-01-13 (+2d) |  |  |
| MOD-PWN-PG-44 | 500 kVA Standby Generator Installation for Potable Water Network Zone 3 | 2026-12-28 → 2026-12-30 (+2d) | 2027-01-02 → 2027-01-04 (+2d) |  | -9.2d → -11.1d |
| MOD-PWN-PG-54 | Canopy, Foundation & Fuel Tank for Potable Water Network Zone 3 | 2026-12-28 → 2026-12-30 (+2d) | 2027-01-04 → 2027-01-06 (+2d) |  | -9.2d → -11.1d |
| MOD-PWN-PG-64 | Electrical Cabling, Circuit Breakers for Potable Water Network Zone 3 | 2027-01-04 → 2027-01-06 (+2d) | 2027-01-09 → 2027-01-11 (+2d) |  | -9.2d → -11.1d |
| MOD-PWN-PG-74 | Earthing & Commissioning for Potable Water Network Zone 3 | 2027-01-09 → 2027-01-11 (+2d) | 2027-01-11 → 2027-01-13 (+2d) |  | -9.2d → -11.1d |
| 10 | **Chlorination System** | 2026-12-28 → 2027-01-03 (+6d) | 2027-01-13 → 2027-01-18 (+5d) |  |  |
| MOD-PWN-CS-33 | Chlorination Device Supply & Installation for Potable Water Network Zone 3 | 2026-12-28 → 2027-01-03 (+6d) | 2027-01-05 → 2027-01-10 (+5d) |  | -11.2d → -15.6d |
| MOD-PWN-CS-43 | Connections to Main Line or Disinfection Chamber for Potable Water Network Zone 3 | 2027-01-05 → 2027-01-11 (+6d) | 2027-01-10 → 2027-01-14 (+4d) |  | -11.2d → -15.6d |
| MOD-PWN-CS-53 | Control Integration for Potable Water Network Zone 3 | 2027-01-10 → 2027-01-16 (+6d) | 2027-01-13 → 2027-01-18 (+5d) |  | -11.2d → -15.6d |
| 11 | **Water Storage System** |  | 2027-01-19 → 2027-01-26 (+7d) |  |  |
| MOD-PWN-WS-11 | Structural tanks for supply or pressure equalization for Potable Water Network Zone 3 |  | 2027-01-19 → 2027-01-26 (+7d) |  | -16.4d → -21.8d |
| 12 | **Street Lighting** |  | 2027-01-03 → 2027-01-10 (+7d) |  |  |
| MOD-PWN-SL-75 | Pole & Fixture Installation for Potable Water Network Zone 3 |  | 2026-12-27 → 2027-01-03 (+7d) |  | -2.36d → -7.76d |
| MOD-PWN-SL-65 | Conduits, Cabling, Backfilling for Potable Water Network Zone 3 |  | 2026-12-27 → 2027-01-03 (+7d) |  | -2.36d → -7.76d |
| MOD-PWN-SL-85 | Connection to Main Supply for Potable Water Network Zone 3 | 2026-12-27 → 2027-01-03 (+7d) | 2027-01-03 → 2027-01-10 (+7d) |  | -2.36d → -7.76d |
| MOD-PWN-SL-95 | Testing & Lighting Commissioning for Potable Water Network Zone 3 | 2026-12-27 → 2027-01-03 (+7d) | 2027-01-03 → 2027-01-10 (+7d) |  | -2.36d → -7.76d |
| 6 | **Irrigation Network Zone 3** |  | 2026-12-07 → 2026-12-13 (+6d) |  |  |
| 1 | **Excavation, Pipe Laying & Backfilling** |  | 2026-11-07 → 2026-11-13 (+6d) |  |  |
| MOD-IRN-EB-120 | Trench Excavation for Irrigation Network Zone 3 |  | 2026-11-02 → 2026-11-09 (+7d) |  | 53.88d → 47.48d |
| MOD-IRN-EB-130 | Lean Concrete / Pipe Bedding with Type B Material for Irrigation Network Zone 3 |  | 2026-11-03 → 2026-11-09 (+6d) |  | 53.88d → 47.48d |
| MOD-IRN-EB-140 | HDPE Pipe Laying (125 mm to 630 mm) for Irrigation Network Zone 3 |  | 2026-11-05 → 2026-11-12 (+7d) |  | 53.88d → 47.48d |
| MOD-IRN-EB-150 | Test (Pressure-slope) for Irrigation Network Zone 3 |  | 2026-11-06 → 2026-11-12 (+6d) |  | 53.88d → 47.48d |
| MOD-IRN-EB-180 | Coating / Wrapping for Irrigation Network Zone 3 |  | 2026-11-06 → 2026-11-12 (+6d) |  | 53.88d → 47.48d |
| MOD-IRN-EB-190 | Backfilling & Warrning Tape for Irrigation Network Zone 3 |  | 2026-11-07 → 2026-11-13 (+6d) |  | 53.88d → 47.48d |
| 2 | **Valves and Appurtenances** |  | 2026-11-03 → 2026-11-09 (+6d) |  |  |
| MOD-IRN-VA-65 | Supply & Installation of Valves (Butterfly Valve) for Irrigation Network Zone 3 |  | 2026-11-01 → 2026-11-08 (+7d) |  | 50.25d → 44.85d |
| MOD-IRN-VA-75 | Installation of Flanges, Bolts, Collars, Nuts for Irrigation Network Zone 3 |  | 2026-11-02 → 2026-11-08 (+6d) |  | 50.25d → 44.85d |
| MOD-IRN-VA-85 | Valve Pressure Testing for Irrigation Network Zone 3 |  | 2026-11-02 → 2026-11-08 (+6d) |  | 50.25d → 44.85d |
| MOD-IRN-VA-95 | Support Brackets/Anchor Blocks for Irrigation Network Zone 3 |  | 2026-11-03 → 2026-11-09 (+6d) |  | 50.25d → 44.85d |
| 3 | **Valve Rooms** |  | 2026-10-31 → 2026-11-07 (+7d) |  |  |
| MOD-IRN-VR-137 | Backfilling and Finishing Valve Chamber for Irrigation Network Zone 3 |  | 2026-10-31 → 2026-11-07 (+7d) |  | 52.5d → 47.1d |
| 4 | **Washout Chambers** |  | 2026-11-01 → 2026-11-08 (+7d) |  |  |
| MOD-IRN-WC-96 | Washout Valve & Pipe Connection Washout Chamber for Irrigation Network Zone 3 |  | 2026-11-01 → 2026-11-07 (+6d) |  | 51.5d → 46.1d |
| MOD-IRN-WC-106 | Manhole Frame, Cover & Ladder Fixing Washout Chamber for Irrigation Network Zone 3 |  | 2026-11-01 → 2026-11-07 (+6d) |  | 51.5d → 46.1d |
| MOD-IRN-WC-116 | Backfilling & Reinstatement Washout Chamber for Irrigation Network Zone 3 |  | 2026-11-01 → 2026-11-08 (+7d) |  | 51.5d → 46.1d |
| 5 | **Air Valve Chambers** |  | 2026-10-31 → 2026-11-07 (+7d) |  |  |
| MOD-IRN-AC-95 | Cover Fixing & Finishing Air Valve Chamber for Irrigation Network Zone 3 |  | 2026-10-31 → 2026-11-07 (+7d) |  | 52.7d → 47.3d |
| 6 | **Flow Meter Chambers** |  | 2026-12-07 → 2026-12-13 (+6d) |  |  |
| MOD-IRN-FC-76 | RCC Base & Wall Construction Flow Meter Chamber for Irrigation Network Zone 3 |  | 2026-11-01 → 2026-11-07 (+6d) |  | 43.4d → 38d |
| MOD-IRN-FC-86 | Flow Meter Installation (280, 300, 500 mm) Flow Meter Chamber for Irrigation Network Zone 3 |  | 2026-11-29 → 2026-12-05 (+6d) |  | 20.95d → 15.55d |
| MOD-IRN-FC-96 | Integration with Pipework Flow Meter Chamber for Irrigation Network Zone 3 |  | 2026-11-30 → 2026-12-06 (+6d) |  | 20.95d → 15.55d |
| MOD-IRN-FC-106 | Testing & Calibration Flow Meter Chamber for Irrigation Network Zone 3 |  | 2026-12-02 → 2026-12-08 (+6d) |  | 20.95d → 15.55d |

| ID | Task | Start | Finish | Complete | Total float |
| --- | --- | --- | --- | --- | --- |
| MOD-IRN-FC-116 | Cover and Access Arrangement Flow Meter Chamber for Irrigation Network Zone 3 | 2026-12-02 → 2026-12-08 (+6d) | 2026-12-07 → 2026-12-13 (+6d) |  | 20.95d → 15.55d |
| 5 | **Sewerage Network Zone 2** |  | 2027-01-05 → 2027-01-11 (+6d) |  |  |
| 1 | **Pipework: Supply, Installation, and Testing** |  | 2026-12-24 → 2026-12-30 (+6d) |  |  |
| 3 | **HDPE Pressure Pipes Installation (250mm–630mm)** |  | 2026-12-24 → 2026-12-30 (+6d) |  |  |
| MOD-SWN-PW-585 | Excavation and Trenching HDPE for Sewerage Network Zone 2 |  | 2026-11-04 → 2026-11-11 (+7d) |  | 65.5d → 59.1d |
| MOD-SWN-PW-595 | Lean Concrete / Bedding HDPE for Sewerage Network Zone 2 |  | 2026-11-13 → 2026-11-19 (+6d) |  | 65.5d → 59.1d |
| MOD-SWN-PW-465 | HDPE Pressure Pipes Installation (250mm–630mm) HDPE for Sewerage Network Zone 2 |  | 2026-11-23 → 2026-11-30 (+7d) |  | 65.5d → 59.1d |
| MOD-SWN-PW-605 | Test (Pressure - Slope) HDPE for Sewerage Network Zone 2 |  | 2026-12-01 → 2026-12-07 (+6d) |  | 84.1d → 77.7d |
| MOD-SWN-PW-615 | Coating / Wrapping HDPE for Sewerage Network Zone 2 |  | 2026-12-09 → 2026-12-15 (+6d) |  | 84.1d → 77.7d |
| MOD-SWN-PW-575 | Backfilling & Warrning Tape HDPE for Sewerage Network Zone 2 | 2026-12-09 → 2026-12-16 (+7d) | 2026-12-24 → 2026-12-30 (+6d) |  | 84.1d → 77.7d |
| 2 | **Fittings and Valves** | 2026-11-23 → 2026-11-30 (+7d) | 2026-12-24 → 2026-12-31 (+7d) |  |  |
| MOD-SWN-FV-5 | Supply & Installation of HDPE Elbows for Sewerage Network Zone 2 | 2026-11-23 → 2026-11-30 (+7d) | 2026-11-30 → 2026-12-07 (+7d) |  | 56.6d → 51.1d |
| MOD-SWN-FV-15 | Gate Valves Installation for Sewerage Network Zone 2 | 2026-11-30 → 2026-12-07 (+7d) | 2026-12-05 → 2026-12-12 (+7d) |  | 56.6d → 51.1d |
| MOD-SWN-FV-25 | Drain Valves Installation for Sewerage Network Zone 2 | 2026-12-05 → 2026-12-12 (+7d) | 2026-12-09 → 2026-12-16 (+7d) |  | 56.6d → 51.1d |
| MOD-SWN-FV-35 | Air Breather & Air Release Valves Installation for Sewerage Network Zone 2 | 2026-12-09 → 2026-12-16 (+7d) | 2026-12-21 → 2026-12-28 (+7d) |  | 56.6d → 51.1d |
| MOD-SWN-FV-45 | Jointing & Piping Accessories Installation for Sewerage Network Zone 2 | 2026-12-21 → 2026-12-28 (+7d) | 2026-12-24 → 2026-12-31 (+7d) |  | 56.6d → 51.1d |
| 3 | **Valve & Flow Meter Chambers** |  | 2027-01-05 → 2027-01-11 (+6d) |  |  |
| 1 | **Valve Chambers Construction** |  | 2026-12-15 → 2026-12-21 (+6d) |  |  |
| MOD-SWN-PW-975 | Excavation Valve Chamber for Sewerage Network Zone 2 |  | 2026-11-04 → 2026-11-10 (+6d) |  | 72.67d → 66.27d |
| MOD-SWN-PW-985 | Lean Concrete / Bedding Valve Chamber for Sewerage Network Zone 2 |  | 2026-11-12 → 2026-11-18 (+6d) |  | 72.67d → 66.27d |
| MOD-SWN-VF-124 | Valve Chambers Construction Valve Chamber for Sewerage Network Zone 2 |  | 2026-11-15 → 2026-11-21 (+6d) |  | 72.67d → 66.27d |
| MOD-SWN-PW-995 | Test Valve Chamber for Sewerage Network Zone 2 | 2026-11-15 → 2026-11-21 (+6d) | 2026-11-30 → 2026-12-06 (+6d) |  | 93.67d → 87.27d |
| MOD-SWN-PW-965 | Backfilling Valve Chamber for Sewerage Network Zone 2 | 2026-11-30 → 2026-12-06 (+6d) | 2026-12-15 → 2026-12-21 (+6d) |  | 93.67d → 87.27d |
| 2 | **Water Drain Chambers Construction** |  | 2026-12-24 → 2026-12-30 (+6d) |  |  |
| MOD-SWN-PW-1015 | Excavation Water Drain Chamber for Sewerage Network Zone 2 |  | 2026-11-04 → 2026-11-11 (+7d) |  | 74.5d → 68.1d |
| MOD-SWN-PW-1025 | Lean Concrete / Bedding Water Drain Chamber for Sewerage Network Zone 2 |  | 2026-11-13 → 2026-11-19 (+6d) |  | 74.5d → 68.1d |
| MOD-SWN-VF-134 | Water Drain Chambers Construction Water Drain Chamber for Sewerage Network Zone 2 |  | 2026-11-24 → 2026-11-30 (+6d) |  | 72.67d → 66.27d |
| MOD-SWN-PW-1035 | Test Water Drain Chamber for Sewerage Network Zone 2 | 2026-11-24 → 2026-11-30 (+6d) | 2026-12-09 → 2026-12-15 (+6d) |  | 84.17d → 77.77d |
| MOD-SWN-PW-1005 | Backfilling Water Drain Chamber for Sewerage Network Zone 2 | 2026-12-09 → 2026-12-15 (+6d) | 2026-12-24 → 2026-12-30 (+6d) |  | 84.17d → 77.77d |
| 3 | **Discharge Chambers Construction** |  | 2026-12-31 → 2027-01-06 (+6d) |  |  |
| MOD-SWN-PW-1055 | Excavation Discharge Chamber for Sewerage Network Zone 2 |  | 2026-11-08 → 2026-11-15 (+7d) |  | 77.7d → 71.3d |
| MOD-SWN-PW-1065 | Lean Concrete / Bedding Discharge Chamber for Sewerage Network Zone 2 |  | 2026-11-19 → 2026-11-25 (+6d) | 50% → 55% | 77.7d → 71.3d |
| MOD-SWN-VF-144 | Discharge Chambers Construction Discharge Chamber for Sewerage Network Zone 2 |  | 2026-12-01 → 2026-12-07 (+6d) | 50% → 53% | 72.67d → 66.27d |
| MOD-SWN-PW-1075 | Test Discharge Chamber for Sewerage Network Zone 2 | 2026-12-01 → 2026-12-07 (+6d) | 2026-12-16 → 2026-12-22 (+6d) |  | 77.67d → 71.27d |
| MOD-SWN-PW-1045 | Backfilling Discharge Chamber for Sewerage Network Zone 2 | 2026-12-16 → 2026-12-22 (+6d) | 2026-12-31 → 2027-01-06 (+6d) |  | 77.67d → 71.27d |
| 4 | **Flow Meter Chambers Construction** |  | 2027-01-05 → 2027-01-11 (+6d) |  |  |
| MOD-SWN-PW-1095 | Excavation Flow Meter Chamber for Sewerage Network Zone 2 |  | 2026-11-08 → 2026-11-15 (+7d) |  | 82.1d → 75.7d |
| MOD-SWN-PW-1105 | Lean Concrete / Bedding Flow Meter Chamber for Sewerage Network Zone 2 |  | 2026-11-21 → 2026-11-27 (+6d) |  | 82.1d → 75.7d |
| MOD-SWN-VF-154 | Flow Meter Chambers Construction Flow Meter Chamber for Sewerage Network Zone 2 | 2026-12-01 → 2026-12-07 (+6d) | 2026-12-06 → 2026-12-12 (+6d) |  | 72.67d → 66.27d |
| MOD-SWN-PW-1115 | Test Flow Meter Chamber for Sewerage Network Zone 2 | 2026-12-06 → 2026-12-12 (+6d) | 2026-12-21 → 2026-12-27 (+6d) |  | 72.67d → 66.27d |
| MOD-SWN-PW-1085 | Backfilling Flow Meter Chamber for Sewerage Network Zone 2 | 2026-12-21 → 2026-12-27 (+6d) | 2027-01-05 → 2027-01-11 (+6d) |  | 72.67d → 66.27d |
| 4 | **Manholes** |  | 2026-12-10 → 2026-12-16 (+6d) |  |  |
| 1 | **1200mm GRP Manholes with Backdrop** |  | 2026-11-30 → 2026-12-07 (+7d) |  |  |
| MOD-SWN-PW-1455 | Excavation 1.2m GRP for Sewerage Network Zone 2 |  | 2026-11-02 → 2026-11-08 (+6d) |  | 98.42d → 92.02d |
| MOD-SWN-PW-1465 | Lean Concrete / Bedding 1.2m GRP for Sewerage Network Zone 2 |  | 2026-11-04 → 2026-11-10 (+6d) |  | 98.42d → 92.02d |
| MOD-SWN-MH-145 | 1200mm GRP Manholes with Backdrop 1.2m GRP for Sewerage Network Zone 2 |  | 2026-11-06 → 2026-11-12 (+6d) |  | 98.42d → 92.02d |
| MOD-SWN-PW-1445 | Backfilling 1.2m GRP for Sewerage Network Zone 2 |  | 2026-11-30 → 2026-12-07 (+7d) |  | 107.77d → 101.37d |
| MOD-SWN-PW-1475 | Test 1.2m GRP for Sewerage Network Zone 2 | 2026-11-06 → 2026-11-12 (+6d) | 2026-11-21 → 2026-11-27 (+6d) |  | 107.77d → 101.37d |
| 2 | **1500mm GRP Manholes (Standard & Backdrop)** |  | 2026-12-03 → 2026-12-09 (+6d) |  |  |
| MOD-SWN-PW-1495 | Excavation 1.5m GRP for Sewerage Network Zone 2 |  | 2026-11-02 → 2026-11-09 (+7d) |  | 100.1d → 93.7d |
| MOD-SWN-PW-1505 | Lean Concrete / Bedding 1.5m GRP for Sewerage Network Zone 2 |  | 2026-11-04 → 2026-11-11 (+7d) |  | 100.1d → 93.7d |
| MOD-SWN-MH-155 | 1500mm GRP Manholes (Standard & Backdrop) 1.5m GRP for Sewerage Network Zone 2 |  | 2026-11-08 → 2026-11-14 (+6d) |  | 98.42d → 92.02d |
| MOD-SWN-PW-1485 | Backfilling 1.5m GRP for Sewerage Network Zone 2 |  | 2026-12-03 → 2026-12-09 (+6d) |  | 105.67d → 99.27d |
| MOD-SWN-PW-1515 | Test 1.5m GRP for Sewerage Network Zone 2 | 2026-11-08 → 2026-11-14 (+6d) | 2026-11-23 → 2026-11-29 (+6d) |  | 105.67d → 99.27d |
| 3 | **1800mm GRP Manholes (Standard & Backdrop)** |  | 2026-12-10 → 2026-12-16 (+6d) |  |  |
| MOD-SWN-PW-1535 | Excavation 1.8m GRP for Sewerage Network Zone 2 |  | 2026-11-01 → 2026-11-08 (+7d) |  | 103.46d → 97.06d |
| MOD-SWN-PW-1545 | Lean Concrete / Bedding 1.8m GRP for Sewerage Network Zone 2 |  | 2026-11-03 → 2026-11-09 (+6d) |  | 103.46d → 97.06d |
| MOD-SWN-MH-165 | 1800mm GRP Manholes (Standard & Backdrop) 1.8m GRP for Sewerage Network Zone 2 |  | 2026-11-10 → 2026-11-16 (+6d) |  | 98.42d → 92.02d |
| MOD-SWN-PW-1555 | Test 1.8m GRP for Sewerage Network Zone 2 | 2026-11-10 → 2026-11-16 (+6d) | 2026-11-25 → 2026-12-01 (+6d) |  | 98.42d → 92.02d |
| MOD-SWN-PW-1525 | Backfilling 1.8m GRP for Sewerage Network Zone 2 | 2026-11-25 → 2026-12-01 (+6d) | 2026-12-10 → 2026-12-16 (+6d) |  | 98.42d → 92.02d |
| 4 | **2000mm GRP Manholes (Standard & Backdrop)** |  | 2026-12-05 → 2026-12-11 (+6d) |  |  |
| MOD-SWN-PW-1575 | Excavation 2m GRP for Sewerage Network Zone 2 |  | 2026-11-02 → 2026-11-08 (+6d) |  | 109.48d → 103.08d |
| MOD-SWN-PW-1585 | Lean Concrete / Bedding 2m GRP for Sewerage Network Zone 2 |  | 2026-11-04 → 2026-11-10 (+6d) |  | 109.48d → 103.08d |
| MOD-SWN-MH-175 | 2000mm GRP Manholes (Standard & Backdrop) 2m GRP for Sewerage Network Zone 2 |  | 2026-11-10 → 2026-11-17 (+7d) |  | 103.37d → 96.97d |
| MOD-SWN-PW-1565 | Backfilling 2m GRP for Sewerage Network Zone 2 |  | 2026-12-05 → 2026-12-11 (+6d) |  | 103.37d → 96.97d |
| MOD-SWN-PW-1595 | Test 2m GRP for Sewerage Network Zone 2 | 2026-11-10 → 2026-11-17 (+7d) | 2026-11-25 → 2026-12-02 (+7d) |  | 103.37d → 96.97d |
| 6 | **Rainwater Drainage Network Zone 2** |  | 2026-12-08 → 2026-12-14 (+6d) |  |  |
| 1 | **Pipe Laying Works** |  | 2026-11-04 → 2026-11-11 (+7d) |  |  |
| 2 | **Supply & Installation of uPVC Pipes (250–300mm dia)** |  | 2026-11-02 → 2026-11-08 (+6d) |  |  |
| MOD-RWN-PL-753 | Laying of uPVC pipe UPVC for Rainwater Drainage Network Zone 2 |  | 2026-10-31 → 2026-11-07 (+7d) |  | -100.9d → -107.3d |

| ID | Task | Start | Finish | Total float |
| --- | --- | --- | --- | --- |
| MOD-RWN-PL-763 | Coating / Wrapping UPVC for Rainwater Drainage Network Zone 2 |  | 2026-11-01 → 2026-11-07 (+6d) | -97.2d → -103.6d |
| MOD-RWN-PL-773 | Test (Pressure-slope) UPVC for Rainwater Drainage Network Zone 2 |  | 2026-10-31 → 2026-11-07 (+7d) | -100.9d → -107.3d |
| MOD-RWN-PL-783 | Backfilling & Warning Tape UPVC for Rainwater Drainage Network Zone 2 |  | 2026-11-02 → 2026-11-08 (+6d) | -98.44d → -104.84d |
| 4 | **uPVC Connection Pipes (150mm dia)** |  | 2026-11-04 → 2026-11-11 (+7d) |  |
| MOD-RWN-PL-853 | Lean Concrete / bedding material UPVC Con. for Rainwater Drainage Network Zone 2 |  | 2026-10-31 → 2026-11-07 (+7d) | -100.86d → -107.26d |
| MOD-RWN-PL-863 | Lay & connect UPVC Con. for Rainwater Drainage Network Zone 2 |  | 2026-11-01 → 2026-11-07 (+6d) | -100.9d → -107.3d |
| MOD-RWN-PL-873 | Test (Pressure-slope) UPVC Con. for Rainwater Drainage Network Zone 2 |  | 2026-11-01 → 2026-11-07 (+6d) | -100.9d → -107.3d |
| MOD-RWN-PL-883 | Backfilling & compaction UPVC Con. for Rainwater Drainage Network Zone 2 |  | 2026-11-04 → 2026-11-11 (+7d) | -100.9d → -107.3d |
| MOD-RWN-PL-903 | Coating / Wrapping UPVC Con. for Rainwater Drainage Network Zone 2 |  | 2026-11-04 → 2026-11-11 (+7d) | -100.9d → -107.3d |
| 5 | **Precast Concrete Box Culverts** |  | 2026-12-08 → 2026-12-14 (+6d) |  |
| 1 | **Box Culverts (500x500mm to 3500x800mm)** |  | 2026-12-08 → 2026-12-14 (+6d) |  |
| MOD-RWN-PC-34 | Excavation to required depth Box culvert for Rainwater Drainage Network Zone 2 |  | 2026-11-02 → 2026-11-08 (+6d) | -114.59d → -119.99d |
| MOD-RWN-PC-44 | Dewatering and trench shoring Box culvert for Rainwater Drainage Network Zone 2 |  | 2026-11-04 → 2026-11-10 (+6d) | -114.59d → -119.99d |
| MOD-RWN-PC-54 | Bedding preparation (gravel/lean concrete) Box culvert for Rainwater Drainage Network Zone 2 |  | 2026-11-08 → 2026-11-14 (+6d) | -114.59d → -119.99d |
| MOD-RWN-PC-64 | Installation of box culvert units Box culvert for Rainwater Drainage Network Zone 2 | 2026-11-08 → 2026-11-14 (+6d) | 2026-11-14 → 2026-11-19 (+5d) | -114.59d → -119.99d |
| MOD-RWN-PC-74 | Alignment and joint sealing Box culvert for Rainwater Drainage Network Zone 2 | 2026-11-14 → 2026-11-19 (+5d) | 2026-11-18 → 2026-11-24 (+6d) | -114.21d → -119.61d |
| MOD-RWN-PC-84 | Construct headwalls/wing walls (if needed) Box culvert for Rainwater Drainage Network Zone 2 | 2026-11-18 → 2026-11-24 (+6d) | 2026-11-26 → 2026-12-02 (+6d) | -114.21d → -119.61d |
| MOD-RWN-PC-94 | Backfilling and compaction Box culvert for Rainwater Drainage Network Zone 2 | 2026-11-26 → 2026-12-02 (+6d) | 2026-12-03 → 2026-12-09 (+6d) | -114.21d → -119.61d |
| MOD-RWN-PC-104 | Surface finishing Box culvert for Rainwater Drainage Network Zone 2 | 2026-12-05 → 2026-12-10 (+5d) | 2026-12-08 → 2026-12-14 (+6d) | -114.21d → -119.61d |
| 2 | **Tube Culverts at Road Intersections** |  | 2026-11-08 → 2026-11-14 (+6d) |  |
| MOD-RWN-PC-124 | Trench excavation under road Tube culvert for Rainwater Drainage Network Zone 2 |  | 2026-11-08 → 2026-11-14 (+6d) | -88.11d → -93.51d |
| 3 | **Box Culverts at Road Intersections** |  | 2026-12-02 → 2026-12-08 (+6d) |  |
| MOD-RWN-PC-184 | Place bedding material for Rainwater Drainage Network Zone 2 |  | 2026-11-02 → 2026-11-08 (+6d) | -109.56d → -114.96d |
| MOD-RWN-PC-194 | Install precast box culvert for Rainwater Drainage Network Zone 2 | 2026-11-02 → 2026-11-09 (+7d) | 2026-11-07 → 2026-11-12 (+5d) | -109.56d → -114.96d |
| MOD-RWN-PC-204 | Construct connection chambers (if needed) for Rainwater Drainage Network Zone 2 | 2026-11-07 → 2026-11-14 (+7d) | 2026-11-08 → 2026-11-14 (+6d) | -109.56d → -114.96d |
| MOD-RWN-PC-214 | Joint treatment and testing for Rainwater Drainage Network Zone 2 | 2026-11-08 → 2026-11-15 (+7d) | 2026-11-22 → 2026-11-28 (+6d) | -109.56d → -114.96d |
| MOD-RWN-PC-224 | Backfilling and surface reinstatement for Rainwater Drainage Network Zone 2 | 2026-11-23 → 2026-11-29 (+6d) | 2026-12-02 → 2026-12-08 (+6d) | -109.56d → -114.96d |
| 4 | **Manholes** |  | 2026-12-08 → 2026-12-14 (+6d) |  |
| 1 | **Circular GRP Manholes (1200–1800mm dia)** |  | 2026-11-21 → 2026-11-26 (+5d) |  |
| MOD-RWN-MH-34 | Dewatering and safety barriers Circular Manhole for Rainwater Drainage Network Zone 2 |  | 2026-11-09 → 2026-11-15 (+6d) | -99.26d → -104.66d |
| MOD-RWN-MH-44 | Concrete base construction Circular Manhole for Rainwater Drainage Network Zone 2 |  | 2026-11-10 → 2026-11-16 (+6d) | -99.26d → -104.66d |
| MOD-RWN-MH-54 | Install GRP manhole shaft sections Circular Manhole for Rainwater Drainage Network Zone 2 |  | 2026-11-12 → 2026-11-18 (+6d) | -99.26d → -104.66d |
| MOD-RWN-MH-64 | Place slab and cover frame Circular Manhole for Rainwater Drainage Network Zone 2 |  | 2026-11-15 → 2026-11-21 (+6d) | -99.26d → -104.66d |
| MOD-RWN-MH-74 | Waterproofing Circular Manhole for Rainwater Drainage Network Zone 2 | 2026-11-15 → 2026-11-21 (+6d) | 2026-11-17 → 2026-11-23 (+6d) | -99.26d → -104.66d |
| MOD-RWN-MH-84 | Backfilling and compaction Circular Manhole for Rainwater Drainage Network Zone 2 | 2026-11-18 → 2026-11-24 (+6d) | 2026-11-21 → 2026-11-26 (+5d) | -99.26d → -104.66d |
| 3 | **Concrete Manholes for 1500x1500 Box Pipes** |  | 2026-11-23 → 2026-11-29 (+6d) |  |
| MOD-RWN-MH-174 | Base slab and wall shuttering Concrete Manhole 1.5x1.5 for Rainwater Drainage Network Zone 2 |  | 2026-11-09 → 2026-11-15 (+6d) | -101.26d → -106.66d |
| MOD-RWN-MH-184 | Wall reinforcement and casting Concrete Manhole 1.5x1.5 for Rainwater Drainage Network Zone 2 |  | 2026-11-11 → 2026-11-18 (+7d) | -101.26d → -106.66d |
| MOD-RWN-MH-194 | Roof slab with openings Concrete Manhole 1.5x1.5 for Rainwater Drainage Network Zone 2 |  | 2026-11-15 → 2026-11-21 (+6d) | -101.26d → -106.66d |
| MOD-RWN-MH-204 | Masonry/benching works inside Concrete Manhole 1.5x1.5 for Rainwater Drainage Network Zone 2 | 2026-11-15 → 2026-11-21 (+6d) | 2026-11-17 → 2026-11-23 (+6d) | -101.26d → -106.66d |
| MOD-RWN-MH-214 | Install cover and frame Concrete Manhole 1.5x1.5 for Rainwater Drainage Network Zone 2 | 2026-11-17 → 2026-11-23 (+6d) | 2026-11-19 → 2026-11-25 (+6d) | -101.26d → -106.66d |
| MOD-RWN-MH-224 | Backfill in layers Concrete Manhole 1.5x1.5 for Rainwater Drainage Network Zone 2 | 2026-11-19 → 2026-11-25 (+6d) | 2026-11-23 → 2026-11-29 (+6d) | -101.26d → -106.66d |
| 2 | **Concrete Manholes for 1000x1000 Box Pipes** |  | 2026-12-08 → 2026-12-14 (+6d) |  |
| MOD-RWN-MH-94 | Excavation Concrete Manhole 1x1 for Rainwater Drainage Network Zone 2 |  | 2026-11-09 → 2026-11-15 (+6d) | -114.59d → -119.99d |
| MOD-RWN-MH-104 | Base slab and wall shuttering Concrete Manhole 1x1 for Rainwater Drainage Network Zone 2 | 2026-11-09 → 2026-11-15 (+6d) | 2026-11-11 → 2026-11-17 (+6d) | -114.59d → -119.99d |
| MOD-RWN-MH-114 | Wall reinforcement and casting Concrete Manhole 1x1 for Rainwater Drainage Network Zone 2 | 2026-11-11 → 2026-11-17 (+6d) | 2026-11-17 → 2026-11-23 (+6d) | -114.59d → -119.99d |
| MOD-RWN-MH-124 | Roof slab with openings Concrete Manhole 1x1 for Rainwater Drainage Network Zone 2 | 2026-11-17 → 2026-11-23 (+6d) | 2026-11-24 → 2026-11-30 (+6d) | -114.59d → -119.99d |
| MOD-RWN-MH-134 | Masonry/benching works inside Concrete Manhole 1x1 for Rainwater Drainage Network Zone 2 | 2026-11-24 → 2026-11-30 (+6d) | 2026-11-30 → 2026-12-06 (+6d) | -114.59d → -119.99d |
| MOD-RWN-MH-144 | Install cover and frame Concrete Manhole 1x1 for Rainwater Drainage Network Zone 2 | 2026-11-30 → 2026-12-06 (+6d) | 2026-12-05 → 2026-12-10 (+5d) | -114.59d → -119.99d |
| MOD-RWN-MH-154 | Backfill in layers Concrete Manhole 1x1 for Rainwater Drainage Network Zone 2 | 2026-12-05 → 2026-12-10 (+5d) | 2026-12-08 → 2026-12-14 (+6d) | -114.59d → -119.99d |
| 3 | **Gully Outfalls to Swales** |  | 2026-11-22 → 2026-11-29 (+7d) |  |
| 1 | **Gully Outfalls to Swales** |  | 2026-11-12 → 2026-11-18 (+6d) |  |
| MOD-RWN-GO-21 | Excavate outfall channel Gully Outfall to Swales for Rainwater Drainage Network Zone 2 |  | 2026-11-08 → 2026-11-14 (+6d) | -92.21d → -97.61d |
| MOD-RWN-GO-31 | Place concrete apron or pipes Gully Outfall to Swales for Rainwater Drainage Network Zone 2 |  | 2026-11-08 → 2026-11-15 (+7d) | -92.21d → -97.61d |
| MOD-RWN-GO-41 | Provide slope protection (riprap) Gully Outfall to Swales for Rainwater Drainage Network Zone 2 |  | 2026-11-09 → 2026-11-15 (+6d) | -92.21d → -97.61d |
| MOD-RWN-GO-51 | Compact and shape terrain Gully Outfall to Swales for Rainwater Drainage Network Zone 2 | 2026-11-10 → 2026-11-16 (+6d) | 2026-11-12 → 2026-11-18 (+6d) | -92.21d → -97.61d |
| 2 | **Riprap Works & Protection** |  | 2026-11-22 → 2026-11-29 (+7d) |  |
| MOD-RWN-GO-61 | Lay filter fabric/membrane for Rainwater Drainage Network Zone 2 |  | 2026-11-09 → 2026-11-15 (+6d) | -101.01d → -106.41d |
| MOD-RWN-GO-71 | Place riprap/stone layer for Rainwater Drainage Network Zone 2 |  | 2026-11-12 → 2026-11-19 (+7d) | -101.01d → -106.41d |
| MOD-RWN-GO-81 | Compact edges for Rainwater Drainage Network Zone 2 | 2026-11-12 → 2026-11-19 (+7d) | 2026-11-18 → 2026-11-25 (+7d) | -101.01d → -106.41d |
| MOD-RWN-GO-91 | Ensure hydraulic flow direction for Rainwater Drainage Network Zone 2 | 2026-11-18 → 2026-11-25 (+7d) | 2026-11-22 → 2026-11-29 (+7d) | -101.01d → -106.41d |
| 6 | **Backfilling & Bedding** |  | 2026-11-10 → 2026-11-16 (+6d) |  |
| 2 | **Gravel Bedding & Filter Cloth for uPVC Drain Pipes** |  | 2026-11-10 → 2026-11-16 (+6d) |  |
| MOD-RWN-BB-102 | Final fill and trench restoration for Rainwater Drainage Network Zone 2 |  | 2026-11-10 → 2026-11-16 (+6d) | -90.35d → -95.75d |
| MOD-RWN-BB-62 | Line trench with filter cloth for Rainwater Drainage Network Zone 2 |  | 2026-11-02 → 2026-11-09 (+7d) | -90.35d → -95.75d |
| MOD-RWN-BB-72 | Place and compact gravel bedding for Rainwater Drainage Network Zone 2 |  | 2026-11-03 → 2026-11-09 (+6d) | -90.35d → -95.75d |
| MOD-RWN-BB-82 | Lay pipe within gravel zone for Rainwater Drainage Network Zone 2 |  | 2026-11-05 → 2026-11-11 (+6d) | -90.35d → -95.75d |
| MOD-RWN-BB-92 | Wrap filter cloth above pipe for Rainwater Drainage Network Zone 2 |  | 2026-11-07 → 2026-11-14 (+7d) | -90.35d → -95.75d |
| 1 | **Potable Water Network Zone 2** |  | 2026-12-16 → 2026-12-23 (+7d) |  |
| 1 | **Pipe Installation Works** |  | 2026-11-01 → 2026-11-08 (+7d) |  |

| ID | Task | Start | Finish | Complete | Total float |
| --- | --- | --- | --- | --- | --- |
| MOD-PWN-PI-153 | Lean Concrete / Pipe Bedding Preparation for Potable Water Network Zone 2 |  | 2026-10-31 → 2026-11-07 (+7d) |  | 59.4d → 53d |
| MOD-PWN-PI-163 | HDPE Pipe Laying (200 mm to 710 mm) for Potable Water Network Zone 2 |  | 2026-11-01 → 2026-11-07 (+6d) |  | 59.4d → 53d |
| MOD-PWN-PI-173 | Test (Pressure-slope) for Potable Water Network Zone 2 |  | 2026-11-01 → 2026-11-07 (+6d) |  | 59.4d → 53d |
| MOD-PWN-PI-203 | Coating / Wrapping for Potable Water Network Zone 2 |  | 2026-11-01 → 2026-11-08 (+7d) |  | 59.4d → 53d |
| MOD-PWN-PI-213 | Backfilling & Warrning Tape for Potable Water Network Zone 2 |  | 2026-11-01 → 2026-11-08 (+7d) |  | 59.4d → 53d |
| 2 | **Valve Installation & Chambers** |  | 2026-11-07 → 2026-11-12 (+5d) |  |  |
| MOD-PWN-VC-37 | Valve Chamber Excavation for Potable Water Network Zone 2 |  | 2026-10-31 → 2026-11-07 (+7d) |  | 31.96d → 26.56d |
| MOD-PWN-VC-47 | RC Slab, Walls, or Precast Chambers for Potable Water Network Zone 2 |  | 2026-11-01 → 2026-11-07 (+6d) | 95% → 96% | 47.21d → 42.08d |
| MOD-PWN-VC-7 | Gate Valves (225–710 mm) for Potable Water Network Zone 2 |  | 2026-11-01 → 2026-11-07 (+6d) | 95% → 96% | 47.72d → 42.44d |
| MOD-PWN-VC-17 | Butterfly Valves (355, 500, 630 mm) for Potable Water Network Zone 2 |  | 2026-11-01 → 2026-11-07 (+6d) | 95% → 96% | 47.72d → 42.44d |
| MOD-PWN-VC-27 | 3-exit (2 x 2.5-inch and 1 x 4-inch) dry vacuum cylinder detachable fire nozzle for Potable Water Network Zone 2 |  | 2026-11-01 → 2026-11-07 (+6d) |  | 47.72d → 42.44d |
| MOD-PWN-VC-57 | Fixing Covers, Gratings, Frames for Potable Water Network Zone 2 |  | 2026-11-02 → 2026-11-08 (+6d) | 90% → 92% | 47.21d → 42.08d |
| MOD-PWN-VC-67 | Tagging & Painting for Potable Water Network Zone 2 | 2026-11-02 → 2026-11-08 (+6d) | 2026-11-07 → 2026-11-12 (+5d) |  | 47.21d → 42.08d |
| 3 | **Flow Meter Installation** |  | 2026-12-16 → 2026-12-23 (+7d) |  |  |
| MOD-PWN-FM-5 | Chamber Excavation (280 mm, 300 mm, 500 mm, 800 mm) for Potable Water Network Zone 2 |  | 2026-11-01 → 2026-11-08 (+7d) |  | 31.96d → 26.56d |
| MOD-PWN-FM-15 | RC or Precast Chamber Construction for Potable Water Network Zone 2 |  | 2026-11-04 → 2026-11-10 (+6d) |  | 31.96d → 26.56d |
| MOD-PWN-FM-25 | Flowmeter Installation & Pipe Integration for Potable Water Network Zone 2 |  | 2026-12-03 → 2026-12-10 (+7d) |  | 12.55d → 7.15d |
| MOD-PWN-FM-35 | Wiring/Cabling if applicable for Potable Water Network Zone 2 | 2026-12-03 → 2026-12-10 (+7d) | 2026-12-13 → 2026-12-20 (+7d) |  | 12.55d → 7.15d |
| MOD-PWN-FM-45 | Calibration & Commissioning for Potable Water Network Zone 2 | 2026-12-13 → 2026-12-20 (+7d) | 2026-12-16 → 2026-12-23 (+7d) |  | 12.55d → 7.15d |
| 4 | **Washout & Air Valve Chambers** |  | 2026-11-05 → 2026-11-12 (+7d) |  |  |
| MOD-PWN-WA-27 | Pipe Work for Potable Water Network Zone 2 |  | 2026-11-01 → 2026-11-08 (+7d) |  | 47.5d → 42.1d |
| MOD-PWN-WA-37 | Washout (Valve + Outlet) Installation for Potable Water Network Zone 2 |  | 2026-11-02 → 2026-11-08 (+6d) |  | 47.5d → 42.1d |
| MOD-PWN-WA-47 | Air Valve Rooms (Valve + Outlet) Installation for Potable Water Network Zone 2 |  | 2026-11-03 → 2026-11-09 (+6d) |  | 47.5d → 42.1d |
| MOD-PWN-WA-57 | Covers, Ladders & Tags for Potable Water Network Zone 2 |  | 2026-11-03 → 2026-11-10 (+7d) |  | 47.5d → 42.1d |
| MOD-PWN-WA-67 | Backfilling & Final Finishing for Potable Water Network Zone 2 | 2026-11-03 → 2026-11-10 (+7d) | 2026-11-05 → 2026-11-12 (+7d) |  | 47.5d → 42.1d |
| 2 | **Irrigation Network Zone 2** |  | 2026-12-03 → 2026-12-10 (+7d) |  |  |
| 1 | **Excavation, Pipe Laying & Backfilling** |  | 2026-11-02 → 2026-11-09 (+7d) |  |  |
| MOD-IRN-EB-340 | Lean Concrete / Pipe Bedding with Type B Material for Irrigation Network Zone 2 |  | 2026-10-31 → 2026-11-07 (+7d) |  | 58.6d → 52.2d |
| MOD-IRN-EB-350 | HDPE Pipe Laying (125 mm to 630 mm) for Irrigation Network Zone 2 |  | 2026-11-01 → 2026-11-07 (+6d) |  | 58.6d → 52.2d |
| MOD-IRN-EB-360 | Test (Pressure-slope) for Irrigation Network Zone 2 |  | 2026-11-01 → 2026-11-08 (+7d) |  | 58.6d → 52.2d |
| MOD-IRN-EB-370 | Coating / Wrapping for Irrigation Network Zone 2 |  | 2026-11-01 → 2026-11-08 (+7d) |  | 58.6d → 52.2d |
| MOD-IRN-EB-380 | Backfilling & Warrning Tape for Irrigation Network Zone 2 |  | 2026-11-02 → 2026-11-09 (+7d) |  | 58.6d → 52.2d |
| 2 | **Valves and Appurtenances** |  | 2026-11-03 → 2026-11-09 (+6d) |  |  |
| MOD-IRN-VA-5 | Supply & Installation of Valves (Gate Valve) for Irrigation Network Zone 2 |  | 2026-11-01 → 2026-11-07 (+6d) |  | 45.6d → 40.2d |
| MOD-IRN-VA-15 | Supply & Installation of Valves (Butterfly Valve) for Irrigation Network Zone 2 |  | 2026-11-01 → 2026-11-07 (+6d) |  | 45.6d → 40.2d |
| MOD-IRN-VA-25 | Installation of Flanges, Bolts, Collars, Nuts for Irrigation Network Zone 2 |  | 2026-11-01 → 2026-11-08 (+7d) |  | 45.6d → 40.2d |
| MOD-IRN-VA-35 | Valve Pressure Testing for Irrigation Network Zone 2 |  | 2026-11-02 → 2026-11-08 (+6d) |  | 50.1d → 44.7d |
| MOD-IRN-VA-45 | Support Brackets/Anchor Blocks for Irrigation Network Zone 2 |  | 2026-11-03 → 2026-11-09 (+6d) |  | 50.1d → 44.7d |
| 3 | **Valve Rooms** |  | 2026-11-01 → 2026-11-08 (+7d) |  |  |
| MOD-IRN-VR-67 | Backfilling and Finishing Valve Chamber for Irrigation Network Zone 2 |  | 2026-11-01 → 2026-11-08 (+7d) |  | 51.4d → 46d |
| 4 | **Washout Chambers** |  | 2026-11-01 → 2026-11-08 (+7d) |  |  |
| MOD-IRN-WC-46 | Manhole Frame, Cover & Ladder Fixing Washout Chamber for Irrigation Network Zone 2 |  | 2026-11-01 → 2026-11-07 (+6d) |  | 51.75d → 46.35d |
| MOD-IRN-WC-56 | Backfilling & Reinstatement Washout Chamber for Irrigation Network Zone 2 |  | 2026-11-01 → 2026-11-08 (+7d) |  | 51.75d → 46.35d |
| 6 | **Flow Meter Chambers** |  | 2026-12-03 → 2026-12-10 (+7d) |  |  |
| MOD-IRN-FC-16 | RCC Base & Wall Construction Flow Meter Chamber for Irrigation Network Zone 2 |  | 2026-11-01 → 2026-11-08 (+7d) |  | 45.6d → 40.2d |
| MOD-IRN-FC-26 | Flow Meter Installation (280, 300, 500 mm) Flow Meter Chamber for Irrigation Network Zone 2 |  | 2026-11-28 → 2026-12-03 (+5d) |  | 23.65d → 18.25d |
| MOD-IRN-FC-36 | Integration with Pipework Flow Meter Chamber for Irrigation Network Zone 2 |  | 2026-11-28 → 2026-12-05 (+7d) |  | 23.65d → 18.25d |
| MOD-IRN-FC-46 | Testing & Calibration Flow Meter Chamber for Irrigation Network Zone 2 |  | 2026-11-30 → 2026-12-07 (+7d) |  | 23.65d → 18.25d |
| MOD-IRN-FC-56 | Cover and Access Arrangement Flow Meter Chamber for Irrigation Network Zone 2 | 2026-11-30 → 2026-12-07 (+7d) | 2026-12-03 → 2026-12-10 (+7d) |  | 23.65d → 18.25d |
| 1 | **Sewerage Network Zone 1** |  | 2027-04-11 → 2027-04-18 (+7d) |  |  |
| 1 | **Pipework: Supply, Installation, and Testing** |  | 2026-11-05 → 2026-11-12 (+7d) |  |  |
| 3 | **HDPE Pressure Pipes Installation (250mm–630mm)** |  | 2026-11-05 → 2026-11-12 (+7d) |  |  |
| MOD-SWN-PW-775 | Lean Concrete / Bedding HDPE for Sewerage Network Zone 1 |  | 2026-11-01 → 2026-11-08 (+7d) |  | 87.55d → 81.15d |
| MOD-SWN-PW-785 | Test (Pressure - Slope) HDPE for Sewerage Network Zone 1 |  | 2026-11-02 → 2026-11-08 (+6d) |  | 133d → 126.6d |
| MOD-SWN-PW-755 | Backfilling & Warrning Tape HDPE for Sewerage Network Zone 1 |  | 2026-11-05 → 2026-11-12 (+7d) |  | 133d → 126.6d |
| 2 | **Fittings and Valves** | 2026-11-01 → 2026-11-08 (+7d) | 2026-12-02 → 2026-12-09 (+7d) |  |  |
| MOD-SWN-FV-001 | Supply & Installation of HDPE Elbows for Sewerage Network Zone 1 | 2026-11-01 → 2026-11-08 (+7d) | 2026-11-08 → 2026-11-15 (+7d) |  | 75.65d → 70.15d |
| MOD-SWN-FV-002 | Gate Valves Installation for Sewerage Network Zone 1 | 2026-11-08 → 2026-11-15 (+7d) | 2026-11-12 → 2026-11-19 (+7d) |  | 75.65d → 70.15d |
| MOD-SWN-FV-003 | Drain Valves Installation for Sewerage Network Zone 1 | 2026-11-12 → 2026-11-19 (+7d) | 2026-11-17 → 2026-11-24 (+7d) |  | 75.65d → 70.15d |
| MOD-SWN-FV-004 | Air Breather & Air Release Valves Installation for Sewerage Network Zone 1 | 2026-11-17 → 2026-11-24 (+7d) | 2026-11-29 → 2026-12-06 (+7d) |  | 75.65d → 70.15d |
| MOD-SWN-FV-005 | Jointing & Piping Accessories Installation for Sewerage Network Zone 1 | 2026-11-29 → 2026-12-06 (+7d) | 2026-12-02 → 2026-12-09 (+7d) |  | 75.65d → 70.15d |
| 3 | **Valve & Flow Meter Chambers** |  | 2027-01-10 → 2027-01-17 (+7d) |  |  |
| 1 | **Valve Chambers Construction** |  | 2026-12-25 → 2026-12-31 (+6d) |  |  |
| MOD-SWN-PW-1135 | Excavation Valve Chamber for Sewerage Network Zone 1 |  | 2026-11-10 → 2026-11-16 (+6d) |  | 66.75d → 60.35d |
| MOD-SWN-PW-1145 | Lean Concrete / Bedding Valve Chamber for Sewerage Network Zone 1 |  | 2026-11-21 → 2026-11-27 (+6d) |  | 66.75d → 60.35d |
| MOD-SWN-VF-164 | Valve Chambers Construction Valve Chamber for Sewerage Network Zone 1 |  | 2026-11-25 → 2026-12-01 (+6d) |  | 66.75d → 60.35d |
| MOD-SWN-PW-1155 | Test Valve Chamber for Sewerage Network Zone 1 | 2026-11-25 → 2026-12-01 (+6d) | 2026-12-10 → 2026-12-16 (+6d) |  | 83.2d → 76.8d |
| MOD-SWN-PW-1125 | Backfilling Valve Chamber for Sewerage Network Zone 1 | 2026-12-10 → 2026-12-16 (+6d) | 2026-12-25 → 2026-12-31 (+6d) |  | 83.2d → 76.8d |
| 2 | **Water Drain Chambers Construction** |  | 2026-12-23 → 2026-12-29 (+6d) |  |  |
| MOD-SWN-PW-1175 | Excavation Water Drain Chamber for Sewerage Network Zone 1 |  | 2026-11-05 → 2026-11-12 (+7d) |  | 80.1d → 73.7d |

| ID | Task | Start | Finish | Complete | Total float |
| --- | --- | --- | --- | --- | --- |
| MOD-SWN-PW-1185 | Lean Concrete / Bedding Water Drain Chamber for Sewerage Network Zone 1 |  | 2026-11-12 → 2026-11-18 (+6d) |  | 80.1d → 73.7d |
| MOD-SWN-VF-174 | Water Drain Chambers Construction Water Drain Chamber for Sewerage Network Zone 1 |  | 2026-12-02 → 2026-12-08 (+6d) |  | 66.75d → 60.35d |
| MOD-SWN-PW-1195 | Test Water Drain Chamber for Sewerage Network Zone 1 |  | 2026-12-08 → 2026-12-14 (+6d) |  | 85.55d → 79.15d |
| MOD-SWN-PW-1165 | Backfilling Water Drain Chamber for Sewerage Network Zone 1 | 2026-12-08 → 2026-12-14 (+6d) | 2026-12-23 → 2026-12-29 (+6d) |  | 85.55d → 79.15d |
| 3 | **Discharge Chambers Construction** |  | 2027-01-08 → 2027-01-15 (+7d) |  |  |
| MOD-SWN-PW-1215 | Excavation Discharge Chamber for Sewerage Network Zone 1 |  | 2026-11-06 → 2026-11-13 (+7d) | 70% → 80% | 81.5d → 75.1d |
| MOD-SWN-PW-1225 | Lean Concrete / Bedding Discharge Chamber for Sewerage Network Zone 1 |  | 2026-11-17 → 2026-11-23 (+6d) | 50% → 60% | 81.5d → 75.1d |
| MOD-SWN-VF-184 | Discharge Chambers Construction Discharge Chamber for Sewerage Network Zone 1 |  | 2026-12-09 → 2026-12-16 (+7d) | 40% → 50% | 66.75d → 60.35d |
| MOD-SWN-PW-1235 | Test Discharge Chamber for Sewerage Network Zone 1 | 2026-12-09 → 2026-12-16 (+7d) | 2026-12-24 → 2026-12-31 (+7d) |  | 68.75d → 62.35d |
| MOD-SWN-PW-1205 | Backfilling Discharge Chamber for Sewerage Network Zone 1 | 2026-12-24 → 2026-12-31 (+7d) | 2027-01-08 → 2027-01-15 (+7d) |  | 68.75d → 62.35d |
| 4 | **Flow Meter Chambers Construction** |  | 2027-01-10 → 2027-01-17 (+7d) |  |  |
| MOD-SWN-PW-1255 | Excavation Flow Meter Chamber for Sewerage Network Zone 1 |  | 2026-11-08 → 2026-11-14 (+6d) |  | 89.93d → 83.53d |
| MOD-SWN-PW-1265 | Lean Concrete / Bedding Flow Meter Chamber for Sewerage Network Zone 1 |  | 2026-11-16 → 2026-11-23 (+7d) |  | 89.93d → 83.53d |
| MOD-SWN-VF-194 | Flow Meter Chambers Construction Flow Meter Chamber for Sewerage Network Zone 1 |  | 2026-12-11 → 2026-12-18 (+7d) |  | 66.75d → 60.35d |
| MOD-SWN-PW-1275 | Test Flow Meter Chamber for Sewerage Network Zone 1 | 2026-12-11 → 2026-12-18 (+7d) | 2026-12-26 → 2027-01-02 (+7d) |  | 66.75d → 60.35d |
| MOD-SWN-PW-1245 | Backfilling Flow Meter Chamber for Sewerage Network Zone 1 | 2026-12-26 → 2027-01-02 (+7d) | 2027-01-10 → 2027-01-17 (+7d) |  | 66.75d → 60.35d |
| 4 | **Manholes** |  | 2026-11-21 → 2026-11-28 (+7d) |  |  |
| 1 | **1200mm GRP Manholes with Backdrop** |  | 2026-11-21 → 2026-11-28 (+7d) |  |  |
| MOD-SWN-PW-1295 | Excavation 1.2m GRP for Sewerage Network Zone 1 |  | 2026-11-01 → 2026-11-07 (+6d) |  | 116.97d → 110.57d |
| MOD-SWN-PW-1305 | Lean Concrete / Bedding 1.2m GRP for Sewerage Network Zone 1 |  | 2026-11-01 → 2026-11-07 (+6d) |  | 116.97d → 110.57d |
| MOD-SWN-MH-105 | 1200mm GRP Manholes with Backdrop 1.2m GRP for Sewerage Network Zone 1 |  | 2026-11-02 → 2026-11-08 (+6d) |  | 116.97d → 110.57d |
| MOD-SWN-PW-1285 | Backfilling 1.2m GRP for Sewerage Network Zone 1 |  | 2026-11-21 → 2026-11-28 (+7d) |  | 116.97d → 110.57d |
| MOD-SWN-PW-1315 | Test 1.2m GRP for Sewerage Network Zone 1 | 2026-11-02 → 2026-11-08 (+6d) | 2026-11-07 → 2026-11-13 (+6d) |  | 116.97d → 110.57d |
| 2 | **1500mm GRP Manholes (Standard & Backdrop)** |  | 2026-11-21 → 2026-11-28 (+7d) |  |  |
| MOD-SWN-PW-1335 | Excavation 1.5m GRP for Sewerage Network Zone 1 |  | 2026-11-01 → 2026-11-07 (+6d) |  | 116.97d → 110.57d |
| MOD-SWN-PW-1345 | Lean Concrete / Bedding 1.5m GRP for Sewerage Network Zone 1 |  | 2026-11-01 → 2026-11-07 (+6d) |  | 116.97d → 110.57d |
| MOD-SWN-MH-115 | 1500mm GRP Manholes (Standard & Backdrop) 1.5m GRP for Sewerage Network Zone 1 |  | 2026-11-02 → 2026-11-08 (+6d) |  | 116.97d → 110.57d |
| MOD-SWN-PW-1325 | Backfilling 1.5m GRP for Sewerage Network Zone 1 |  | 2026-11-21 → 2026-11-28 (+7d) |  | 116.97d → 110.57d |
| MOD-SWN-PW-1355 | Test 1.5m GRP for Sewerage Network Zone 1 | 2026-11-02 → 2026-11-08 (+6d) | 2026-11-07 → 2026-11-13 (+6d) |  | 116.97d → 110.57d |
| 3 | **1800mm GRP Manholes (Standard & Backdrop)** |  | 2026-11-21 → 2026-11-27 (+6d) |  |  |
| MOD-SWN-PW-1375 | Excavation 1.8m GRP for Sewerage Network Zone 1 |  | 2026-11-01 → 2026-11-07 (+6d) |  | 116.97d → 110.57d |
| MOD-SWN-PW-1385 | Lean Concrete / Bedding 1.8m GRP for Sewerage Network Zone 1 |  | 2026-11-01 → 2026-11-07 (+6d) |  | 116.97d → 110.57d |
| MOD-SWN-MH-125 | 1800mm GRP Manholes (Standard & Backdrop) 1.8m GRP for Sewerage Network Zone 1 |  | 2026-11-02 → 2026-11-08 (+6d) |  | 116.97d → 110.57d |
| MOD-SWN-PW-1365 | Backfilling 1.8m GRP for Sewerage Network Zone 1 |  | 2026-11-21 → 2026-11-27 (+6d) |  | 117.17d → 110.77d |
| MOD-SWN-PW-1395 | Test 1.8m GRP for Sewerage Network Zone 1 | 2026-11-02 → 2026-11-08 (+6d) | 2026-11-07 → 2026-11-13 (+6d) |  | 117.17d → 110.77d |
| 4 | **2000mm GRP Manholes (Standard & Backdrop)** |  | 2026-11-21 → 2026-11-28 (+7d) |  |  |
| MOD-SWN-PW-1415 | Excavation 2m GRP for Sewerage Network Zone 1 |  | 2026-11-01 → 2026-11-07 (+6d) |  | 116.97d → 110.57d |
| MOD-SWN-PW-1425 | Lean Concrete / Bedding 2m GRP for Sewerage Network Zone 1 |  | 2026-11-01 → 2026-11-07 (+6d) |  | 116.97d → 110.57d |
| MOD-SWN-MH-135 | 2000mm GRP Manholes (Standard & Backdrop) 2m GRP for Sewerage Network Zone 1 |  | 2026-11-02 → 2026-11-08 (+6d) |  | 116.97d → 110.57d |
| MOD-SWN-PW-1405 | Backfilling 2m GRP for Sewerage Network Zone 1 |  | 2026-11-21 → 2026-11-28 (+7d) |  | 116.97d → 110.57d |
| MOD-SWN-PW-1435 | Test 2m GRP for Sewerage Network Zone 1 | 2026-11-02 → 2026-11-08 (+6d) | 2026-11-07 → 2026-11-13 (+6d) |  | 116.97d → 110.57d |
| 5 | **Pumping Stations** |  | 2027-04-11 → 2027-04-18 (+7d) |  |  |
| 1 | **Sewage Pumps and MCC System** | 2026-11-26 → 2026-12-03 (+7d) | 2027-01-17 → 2027-01-24 (+7d) |  |  |
| MOD-SWN-PS-002 | Sewage pumps incl. MCC, control panel, flow meters, transducers, switches, GRP piping, testing & installation – PS1 for | 2026-11-26 → 2026-12-03 (+7d) | 2026-12-09 → 2026-12-16 (+7d) |  | 32.75d → 27.35d |
| MOD-SWN-PS-003 | Sewage pumps (2x86 l/s, 1x325 l/s) incl. MCC – PS1 for Sewerage Network Zone 1 | 2026-12-09 → 2026-12-16 (+7d) | 2026-12-23 → 2026-12-30 (+7d) |  | 32.75d → 27.35d |
| MOD-SWN-PS-004 | Sewage pumps (2x55 l/s) incl. MCC – PS2 for Sewerage Network Zone 1 | 2026-12-23 → 2026-12-30 (+7d) | 2027-01-17 → 2027-01-24 (+7d) |  | 32.75d → 27.35d |
| 2 | **Odor Control System** | 2026-12-28 → 2027-01-04 (+7d) | 2027-01-26 → 2027-02-02 (+7d) |  |  |
| MOD-SWN-PS-0081 | Odor control system – All stations (PS1) for Sewerage Network Zone 1 | 2026-12-28 → 2027-01-04 (+7d) | 2027-01-09 → 2027-01-16 (+7d) |  | -23.21d → -29.21d |
| MOD-SWN-PS-0082 | Odor control system – All stations (PS2) for Sewerage Network Zone 1 | 2027-01-09 → 2027-01-16 (+7d) | 2027-01-26 → 2027-02-02 (+7d) |  | 24.79d → 18.79d |
| 3 | **In-Line Booster Stations** | 2027-01-09 → 2027-01-16 (+7d) | 2027-04-11 → 2027-04-18 (+7d) |  |  |
| MOD-SWN-PS-010 | In-Line Booster Stations - Civil Works for Sewerage Network Zone 1 | 2027-01-09 → 2027-01-16 (+7d) | 2027-02-02 → 2027-02-11 (+9d) |  | -23.21d → -29.21d |
| MOD-SWN-PS-1164 | In-Line Booster Stations - Mechanical Works for Sewerage Network Zone 1 | 2027-02-02 → 2027-02-11 (+9d) | 2027-03-17 → 2027-03-24 (+7d) |  | -23.21d → -29.21d |
| MOD-SWN-PS-1174 | In-Line Booster Stations - Electrical Works for Sewerage Network Zone 1 | 2027-03-17 → 2027-03-24 (+7d) | 2027-04-11 → 2027-04-18 (+7d) |  | -23.21d → -29.21d |
| 7 | **Engine/Motor Control Center Buildings** | 2026-10-31 → 2026-11-07 (+7d) | 2026-11-09 → 2026-11-15 (+6d) |  |  |
| MOD-SWN-PS-038 | MCC Building – PS1 for Sewerage Network Zone 1 | 2026-10-31 → 2026-11-07 (+7d) | 2026-11-01 → 2026-11-07 (+6d) |  | 37d → 31.6d |
| MOD-SWN-PS-039 | MCC Building – PS2 for Sewerage Network Zone 1 | 2026-11-01 → 2026-11-08 (+7d) | 2026-11-09 → 2026-11-15 (+6d) |  | 61d → 55.6d |
| 4 | **Valves and Fittings (General Supply & Installation)** | 2026-11-26 → 2026-12-03 (+7d) | 2026-12-02 → 2026-12-09 (+7d) |  |  |
| MOD-SWN-PS-012 | Valves, fittings & accessories – PS1 for Sewerage Network Zone 1 | 2026-11-26 → 2026-12-03 (+7d) | 2026-11-29 → 2026-12-06 (+7d) |  | 71.75d → 66.35d |
| MOD-SWN-PS-013 | 35mm raked bar SS 316 mesh – PS1 for Sewerage Network Zone 1 | 2026-11-29 → 2026-12-06 (+7d) | 2026-11-30 → 2026-12-07 (+7d) |  | 71.75d → 66.35d |
| MOD-SWN-PS-014 | Valves, fittings, flow meters – PS2 for Sewerage Network Zone 1 | 2026-11-30 → 2026-12-07 (+7d) | 2026-12-02 → 2026-12-09 (+7d) |  | 71.75d → 66.35d |
| 5 | **Tank with Canopy** | 2027-02-02 → 2027-02-11 (+9d) | 2027-02-27 → 2027-03-15 (+16d) |  |  |
| MOD-SWN-PS-019 | Tank with canopy (per specs/drawings) - PS1 for Sewerage Network Zone 1 | 2027-02-02 → 2027-02-11 (+9d) | 2027-02-27 → 2027-03-15 (+16d) |  | 5.79d → -0.21d |
| 6 | **Pump Well and Valve Chambers** | 2026-11-01 → 2026-11-08 (+7d) | 2027-01-12 → 2027-01-18 (+6d) |  |  |
| MOD-SWN-PS-022 | Pump well & valve chamber structure – PS1 (2 wells, 12m deep) for Sewerage Network Zone 1 | 2026-11-01 → 2026-11-08 (+7d) | 2026-11-16 → 2026-11-22 (+6d) |  | 37d → 31.6d |
| MOD-SWN-PS-023 | Concrete wall (5x5x1m) inside PS1 well for Sewerage Network Zone 1 | 2026-11-16 → 2026-11-23 (+7d) | 2026-11-24 → 2026-11-30 (+6d) |  | 37d → 31.6d |
| MOD-SWN-PS-027 | Pump well & valve chamber structure – PS2 (2 wells, 3m each, 9m depth) for Sewerage Network Zone 1 | 2026-11-16 → 2026-11-23 (+7d) | 2026-12-02 → 2026-12-08 (+6d) |  | 41d → 35.6d |
| MOD-SWN-PS-024 | 35 mm raked bar SS 316 network chamber PS1 for Sewerage Network Zone 1 | 2026-11-24 → 2026-12-01 (+7d) | 2026-11-25 → 2026-12-01 (+6d) |  | 37d → 31.6d |
| MOD-SWN-PS-025 | Valve chamber – PS1 for Sewerage Network Zone 1 | 2026-11-25 → 2026-12-02 (+7d) | 2026-12-02 → 2026-12-08 (+6d) |  | 37d → 31.6d |
| MOD-SWN-PS-026 | Flow meter chamber – PS1 for Sewerage Network Zone 1 | 2026-12-02 → 2026-12-09 (+7d) | 2026-12-07 → 2026-12-13 (+6d) |  | 37d → 31.6d |
| MOD-SWN-PS-028 | Valve chamber – PS2 for Sewerage Network Zone 1 | 2026-12-07 → 2026-12-14 (+7d) | 2026-12-26 → 2026-12-31 (+5d) |  | 37d → 31.6d |

| ID | Task | Start | Finish | Total float |
| --- | --- | --- | --- | --- |
| MOD-SWN-PS-029 | Flow meter chamber – PS2 for Sewerage Network Zone 1 | 2026-12-26 → 2027-01-02 (+7d) | 2027-01-12 → 2027-01-18 (+6d) | 37d → 31.6d |
| 8 | **Odor Control System Base/Plinth** | 2026-11-19 → 2026-11-26 (+7d) | 2026-11-26 → 2026-12-02 (+6d) |  |
| MOD-SWN-PS-043 | Concrete plinth below odor control – All PSs for Sewerage Network Zone 1 | 2026-11-19 → 2026-11-26 (+7d) | 2026-11-26 → 2026-12-02 (+6d) | 4d → -1.4d |
| 10 | **Lighting Works** |  | 2026-11-28 → 2026-12-03 (+5d) |  |
| MOD-SWN-PS-052 | 250W Flood Light installation – Each PS for Sewerage Network Zone 1 |  | 2026-11-28 → 2026-12-03 (+5d) | 76.4d → 71d |
| 11 | **Duct Works** | 2026-11-16 → 2026-11-23 (+7d) | 2026-11-24 → 2026-11-30 (+6d) |  |
| MOD-SWN-PS-054 | uPVC duct Track 1 – All PSs for Sewerage Network Zone 1 | 2026-11-16 → 2026-11-23 (+7d) | 2026-11-17 → 2026-11-23 (+6d) | 76d → 70.6d |
| MOD-SWN-PS-055 | uPVC duct Track 2 – All PSs for Sewerage Network Zone 1 | 2026-11-17 → 2026-11-24 (+7d) | 2026-11-19 → 2026-11-25 (+6d) | 76d → 70.6d |
| MOD-SWN-PS-056 | uPVC duct Track 8 – All PSs for Sewerage Network Zone 1 | 2026-11-19 → 2026-11-26 (+7d) | 2026-11-24 → 2026-11-30 (+6d) | 76d → 70.6d |
| 12 | **Grounding Works** | 2026-11-24 → 2026-12-01 (+7d) | 2026-11-28 → 2026-12-03 (+5d) |  |
| MOD-SWN-PS-058 | Grounding pit – Each PS for Sewerage Network Zone 1 | 2026-11-24 → 2026-12-01 (+7d) | 2026-11-25 → 2026-12-01 (+6d) | 76d → 70.6d |
| MOD-SWN-PS-059 | 600x600 Cable pull pit – All PSs for Sewerage Network Zone 1 | 2026-11-25 → 2026-12-02 (+7d) | 2026-11-28 → 2026-12-03 (+5d) | 76d → 70.6d |
| 13 | **Landscaping / Interlocking Tiles** | 2026-10-31 → 2026-11-07 (+7d) | 2026-11-24 → 2026-11-30 (+6d) |  |
| MOD-SWN-PS-061 | Building perimeter interlock tiles for Sewerage Network Zone 1 | 2026-10-31 → 2026-11-07 (+7d) | 2026-11-19 → 2026-11-25 (+6d) | 4d → -1.4d |
| MOD-SWN-PS-062 | Entrance road paving tiles for Sewerage Network Zone 1 | 2026-11-19 → 2026-11-26 (+7d) | 2026-11-24 → 2026-11-30 (+6d) | 79d → 73.6d |
| 14 | **Pumping Station Internal Drainage Network** | 2026-10-31 → 2026-11-07 (+7d) | 2026-11-08 → 2026-11-14 (+6d) |  |
| MOD-SWN-PS-064 | Internal surface drainage channels for Sewerage Network Zone 1 | 2026-10-31 → 2026-11-07 (+7d) | 2026-11-08 → 2026-11-14 (+6d) | 93d → 87.6d |
| 12 | **Rainwater Drainage Network Zone 1** |  | 2026-11-30 → 2026-12-07 (+7d) |  |
| 1 | **Pipe Laying Works** |  | 2026-11-08 → 2026-11-15 (+7d) |  |
| 2 | **Supply & Installation of uPVC Pipes (250–300mm dia)** |  | 2026-11-04 → 2026-11-10 (+6d) |  |
| MOD-RWN-PL-913 | Excavation to required depth UPVC for Rainwater Drainage Network Zone 1 |  | 2026-11-01 → 2026-11-08 (+7d) | -104.85d → -111.25d |
| MOD-RWN-PL-923 | Lean Concrete / Bedding UPVC for Rainwater Drainage Network Zone 1 |  | 2026-11-01 → 2026-11-08 (+7d) | -104.85d → -111.25d |
| MOD-RWN-PL-933 | Laying of uPVC pipe UPVC for Rainwater Drainage Network Zone 1 |  | 2026-11-02 → 2026-11-09 (+7d) | -104.85d → -111.25d |
| MOD-RWN-PL-953 | Test (Pressure-slope) UPVC for Rainwater Drainage Network Zone 1 |  | 2026-11-03 → 2026-11-09 (+6d) | -104.85d → -111.25d |
| MOD-RWN-PL-943 | Coating / Wrapping UPVC for Rainwater Drainage Network Zone 1 |  | 2026-11-03 → 2026-11-09 (+6d) | -99.41d → -105.81d |
| MOD-RWN-PL-963 | Backfilling & Warning Tape UPVC for Rainwater Drainage Network Zone 1 |  | 2026-11-04 → 2026-11-10 (+6d) | -100.41d → -106.81d |
| 4 | **uPVC Connection Pipes (150mm dia)** |  | 2026-11-08 → 2026-11-15 (+7d) |  |
| MOD-RWN-PL-1043 | Lay & connect UPVC Con. for Rainwater Drainage Network Zone 1 |  | 2026-11-03 → 2026-11-09 (+6d) | -104.85d → -111.25d |
| MOD-RWN-PL-1053 | Test (Pressure-slope) UPVC Con. for Rainwater Drainage Network Zone 1 |  | 2026-11-04 → 2026-11-10 (+6d) | -104.85d → -111.25d |
| MOD-RWN-PL-1083 | Coating / Wrapping UPVC Con. for Rainwater Drainage Network Zone 1 |  | 2026-11-08 → 2026-11-14 (+6d) | -104.85d → -111.25d |
| MOD-RWN-PL-1063 | Backfilling & compaction UPVC Con. for Rainwater Drainage Network Zone 1 |  | 2026-11-08 → 2026-11-15 (+7d) | -104.85d → -111.25d |
| 5 | **Precast Concrete Box Culverts** |  | 2026-11-30 → 2026-12-06 (+6d) |  |
| 1 | **Box Culverts (500x500mm to 3500x800mm)** |  | 2026-11-24 → 2026-12-01 (+7d) |  |
| MOD-RWN-PC-003 | Excavation to required depth Box culvert for Rainwater Drainage Network Zone 1 |  | 2026-11-01 → 2026-11-07 (+6d) | -107.81d → -113.21d |
| MOD-RWN-PC-004 | Dewatering and trench shoring Box culvert for Rainwater Drainage Network Zone 1 |  | 2026-11-02 → 2026-11-08 (+6d) | -107.81d → -113.21d |
| MOD-RWN-PC-005 | Bedding preparation (gravel/lean concrete) Box culvert for Rainwater Drainage Network Zone 1 |  | 2026-11-03 → 2026-11-09 (+6d) | -107.81d → -113.21d |
| MOD-RWN-PC-006 | Installation of box culvert units Box culvert for Rainwater Drainage Network Zone 1 |  | 2026-11-07 → 2026-11-14 (+7d) | -107.81d → -113.21d |
| MOD-RWN-PC-007 | Alignment and joint sealing Box culvert for Rainwater Drainage Network Zone 1 |  | 2026-11-09 → 2026-11-16 (+7d) | -102.91d → -108.31d |
| MOD-RWN-PC-008 | Construct headwalls/wing walls (if needed) Box culvert for Rainwater Drainage Network Zone 1 | 2026-11-09 → 2026-11-16 (+7d) | 2026-11-15 → 2026-11-22 (+7d) | -102.91d → -108.31d |
| MOD-RWN-PC-009 | Backfilling and compaction Box culvert for Rainwater Drainage Network Zone 1 | 2026-11-15 → 2026-11-22 (+7d) | 2026-11-21 → 2026-11-28 (+7d) | -102.91d → -108.31d |
| MOD-RWN-PC-010 | Surface finishing Box culvert for Rainwater Drainage Network Zone 1 | 2026-11-21 → 2026-11-28 (+7d) | 2026-11-24 → 2026-12-01 (+7d) | -102.91d → -108.31d |
| 2 | **Tube Culverts at Road Intersections** |  | 2026-11-19 → 2026-11-25 (+6d) |  |
| MOD-RWN-PC-014 | Pipe bedding and twin pipe alignment Tube culvert for Rainwater Drainage Network Zone 1 |  | 2026-11-04 → 2026-11-10 (+6d) | -98.41d → -103.81d |
| MOD-RWN-PC-015 | Pipe laying and jointing Tube culvert for Rainwater Drainage Network Zone 1 |  | 2026-11-10 → 2026-11-16 (+6d) | -98.41d → -103.81d |
| MOD-RWN-PC-016 | Backfilling and road reinstatement Tube culvert for Rainwater Drainage Network Zone 1 | 2026-11-10 → 2026-11-16 (+6d) | 2026-11-19 → 2026-11-25 (+6d) | -98.41d → -103.81d |
| 3 | **Box Culverts at Road Intersections** |  | 2026-11-30 → 2026-12-06 (+6d) |  |
| MOD-RWN-PC-019 | Deep trench excavation with shoring for Rainwater Drainage Network Zone 1 |  | 2026-11-01 → 2026-11-07 (+6d) | -107.34d → -112.74d |
| MOD-RWN-PC-020 | Place bedding material for Rainwater Drainage Network Zone 1 |  | 2026-11-02 → 2026-11-08 (+6d) | -107.34d → -112.74d |
| MOD-RWN-PC-021 | Install precast box culvert for Rainwater Drainage Network Zone 1 | 2026-11-02 → 2026-11-08 (+6d) | 2026-11-07 → 2026-11-12 (+5d) | -107.34d → -112.74d |
| MOD-RWN-PC-022 | Construct connection chambers (if needed) for Rainwater Drainage Network Zone 1 | 2026-11-07 → 2026-11-12 (+5d) | 2026-11-08 → 2026-11-14 (+6d) | -107.34d → -112.74d |
| MOD-RWN-PC-023 | Joint treatment and testing for Rainwater Drainage Network Zone 1 | 2026-11-08 → 2026-11-14 (+6d) | 2026-11-19 → 2026-11-25 (+6d) | -107.34d → -112.74d |
| MOD-RWN-PC-024 | Backfilling and surface reinstatement for Rainwater Drainage Network Zone 1 | 2026-11-19 → 2026-11-25 (+6d) | 2026-11-30 → 2026-12-06 (+6d) | -107.34d → -112.74d |
| 4 | **Manholes** |  | 2026-11-30 → 2026-12-07 (+7d) |  |
| 1 | **Circular GRP Manholes (1200–1800mm dia)** |  | 2026-11-21 → 2026-11-28 (+7d) |  |
| MOD-RWN-MH-003 | Dewatering and safety barriers Circular Manhole for Rainwater Drainage Network Zone 1 |  | 2026-11-05 → 2026-11-12 (+7d) | -99.76d → -105.16d |
| MOD-RWN-MH-004 | Concrete base construction Circular Manhole for Rainwater Drainage Network Zone 1 |  | 2026-11-08 → 2026-11-14 (+6d) | -99.76d → -105.16d |
| MOD-RWN-MH-005 | Install GRP manhole shaft sections Circular Manhole for Rainwater Drainage Network Zone 1 |  | 2026-11-12 → 2026-11-19 (+7d) | -99.76d → -105.16d |
| MOD-RWN-MH-006 | Place slab and cover frame Circular Manhole for Rainwater Drainage Network Zone 1 |  | 2026-11-16 → 2026-11-22 (+6d) | -99.76d → -105.16d |
| MOD-RWN-MH-007 | Waterproofing Circular Manhole for Rainwater Drainage Network Zone 1 |  | 2026-11-18 → 2026-11-25 (+7d) | -99.76d → -105.16d |
| MOD-RWN-MH-008 | Backfilling and compaction Circular Manhole for Rainwater Drainage Network Zone 1 |  | 2026-11-21 → 2026-11-28 (+7d) | -99.76d → -105.16d |
| 3 | **Concrete Manholes for 1500x1500 Box Pipes** |  | 2026-11-23 → 2026-11-29 (+6d) |  |
| MOD-RWN-MH-019 | Base slab and wall shuttering Concrete Manhole 1.5x1.5 for Rainwater Drainage Network Zone 1 |  | 2026-11-05 → 2026-11-12 (+7d) | -101.56d → -106.96d |
| MOD-RWN-MH-020 | Wall reinforcement and casting Concrete Manhole 1.5x1.5 for Rainwater Drainage Network Zone 1 |  | 2026-11-08 → 2026-11-15 (+7d) | -101.56d → -106.96d |
| MOD-RWN-MH-021 | Roof slab with openings Concrete Manhole 1.5x1.5 for Rainwater Drainage Network Zone 1 |  | 2026-11-10 → 2026-11-16 (+6d) | -101.56d → -106.96d |
| MOD-RWN-MH-022 | Masonry/benching works inside Concrete Manhole 1.5x1.5 for Rainwater Drainage Network Zone 1 |  | 2026-11-12 → 2026-11-18 (+6d) | -101.56d → -106.96d |
| MOD-RWN-MH-023 | Install cover and frame Concrete Manhole 1.5x1.5 for Rainwater Drainage Network Zone 1 |  | 2026-11-17 → 2026-11-23 (+6d) | -101.56d → -106.96d |
| MOD-RWN-MH-024 | Backfill in layers Concrete Manhole 1.5x1.5 for Rainwater Drainage Network Zone 1 | 2026-11-17 → 2026-11-23 (+6d) | 2026-11-23 → 2026-11-29 (+6d) | -101.56d → -106.96d |
| 2 | **Concrete Manholes for 1000x1000 Box Pipes** |  | 2026-11-30 → 2026-12-07 (+7d) |  |
| MOD-RWN-MH-010 | Excavation Concrete Manhole 1x1 for Rainwater Drainage Network Zone 1 |  | 2026-11-05 → 2026-11-11 (+6d) | -107.81d → -113.21d |
| MOD-RWN-MH-011 | Base slab and wall shuttering Concrete Manhole 1x1 for Rainwater Drainage Network Zone 1 |  | 2026-11-07 → 2026-11-14 (+7d) | -107.81d → -113.21d |

| ID | Task | Start | Finish | Complete | Total float |
| --- | --- | --- | --- | --- | --- |
| MOD-RWN-MH-012 | Wall reinforcement and casting Concrete Manhole 1x1 for Rainwater Drainage Network Zone 1 |  | 2026-11-10 → 2026-11-17 (+7d) |  | -107.81d → -113.21d |
| MOD-RWN-MH-013 | Roof slab with openings Concrete Manhole 1x1 for Rainwater Drainage Network Zone 1 |  | 2026-11-15 → 2026-11-22 (+7d) |  | -107.81d → -113.21d |
| MOD-RWN-MH-014 | Masonry/benching works inside Concrete Manhole 1x1 for Rainwater Drainage Network Zone 1 |  | 2026-11-22 → 2026-11-29 (+7d) |  | -107.81d → -113.21d |
| MOD-RWN-MH-015 | Install cover and frame Concrete Manhole 1x1 for Rainwater Drainage Network Zone 1 | 2026-11-22 → 2026-11-29 (+7d) | 2026-11-26 → 2026-12-03 (+7d) |  | -107.81d → -113.21d |
| MOD-RWN-MH-016 | Backfill in layers Concrete Manhole 1x1 for Rainwater Drainage Network Zone 1 | 2026-11-26 → 2026-12-03 (+7d) | 2026-11-30 → 2026-12-07 (+7d) |  | -107.81d → -113.21d |
| 2 | **Chambers and Catch Basins** |  | 2026-11-07 → 2026-11-14 (+7d) |  |  |
| 2 | **Rainwater Catch Basins** |  | 2026-11-07 → 2026-11-14 (+7d) |  |  |
| MOD-RWN-CC-012 | Backfill and surface finish Catch Basin for Rainwater Drainage Network Zone 1 |  | 2026-11-07 → 2026-11-14 (+7d) |  | -87.97d → -93.37d |
| 3 | **Gully Outfalls to Swales** |  | 2026-11-11 → 2026-11-17 (+6d) |  |  |
| 1 | **Gully Outfalls to Swales** |  | 2026-11-09 → 2026-11-15 (+6d) |  |  |
| MOD-RWN-GO-004 | Place concrete apron or pipes Gully Outfall to Swales for Rainwater Drainage Network Zone 1 |  | 2026-11-08 → 2026-11-14 (+6d) |  | -89.24d → -94.64d |
| MOD-RWN-GO-005 | Provide slope protection (riprap) Gully Outfall to Swales for Rainwater Drainage Network Zone 1 |  | 2026-11-08 → 2026-11-14 (+6d) |  | -89.24d → -94.64d |
| MOD-RWN-GO-006 | Compact and shape terrain Gully Outfall to Swales for Rainwater Drainage Network Zone 1 |  | 2026-11-09 → 2026-11-15 (+6d) |  | -89.24d → -94.64d |
| 2 | **Riprap Works & Protection** |  | 2026-11-11 → 2026-11-17 (+6d) |  |  |
| MOD-RWN-GO-008 | Lay filter fabric/membrane for Rainwater Drainage Network Zone 1 |  | 2026-11-08 → 2026-11-14 (+6d) |  | -91.63d → -97.03d |
| MOD-RWN-GO-009 | Place riprap/stone layer for Rainwater Drainage Network Zone 1 |  | 2026-11-10 → 2026-11-16 (+6d) |  | -91.63d → -97.03d |
| MOD-RWN-GO-010 | Compact edges for Rainwater Drainage Network Zone 1 |  | 2026-11-11 → 2026-11-17 (+6d) |  | -91.63d → -97.03d |
| 6 | **Backfilling & Bedding** |  | 2026-11-17 → 2026-11-23 (+6d) |  |  |
| 1 | **Backfilling Materials (Type A – 201–700mm Pipes)** |  | 2026-11-10 → 2026-11-17 (+7d) |  |  |
| MOD-RWN-BB-002 | Place granular bedding under pipe for Rainwater Drainage Network Zone 1 |  | 2026-11-01 → 2026-11-07 (+6d) |  | -102.31d → -107.71d |
| MOD-RWN-BB-003 | Lay and align pipe for Rainwater Drainage Network Zone 1 |  | 2026-11-01 → 2026-11-08 (+7d) |  | -91.05d → -96.45d |
| MOD-RWN-BB-004 | Backfill up to spring line for Rainwater Drainage Network Zone 1 |  | 2026-11-01 → 2026-11-08 (+7d) |  | -91.05d → -96.45d |
| MOD-RWN-BB-005 | Compact layer-wise for Rainwater Drainage Network Zone 1 |  | 2026-11-02 → 2026-11-08 (+6d) |  | -91.05d → -96.45d |
| MOD-RWN-BB-006 | Final fill to subgrade level for Rainwater Drainage Network Zone 1 | 2026-11-03 → 2026-11-10 (+7d) | 2026-11-10 → 2026-11-17 (+7d) |  | -91.05d → -96.45d |
| 2 | **Gravel Bedding & Filter Cloth for uPVC Drain Pipes** |  | 2026-11-17 → 2026-11-23 (+6d) |  |  |
| MOD-RWN-BB-008 | Line trench with filter cloth for Rainwater Drainage Network Zone 1 |  | 2026-10-31 → 2026-11-07 (+7d) |  | -96.6d → -102d |
| MOD-RWN-BB-009 | Place and compact gravel bedding for Rainwater Drainage Network Zone 1 |  | 2026-11-01 → 2026-11-07 (+6d) |  | -96.6d → -102d |
| MOD-RWN-BB-010 | Lay pipe within gravel zone for Rainwater Drainage Network Zone 1 |  | 2026-11-01 → 2026-11-07 (+6d) |  | -96.6d → -102d |
| MOD-RWN-BB-011 | Wrap filter cloth above pipe for Rainwater Drainage Network Zone 1 |  | 2026-11-02 → 2026-11-09 (+7d) |  | -96.6d → -102d |
| MOD-RWN-BB-012 | Final fill and trench restoration for Rainwater Drainage Network Zone 1 | 2026-11-03 → 2026-11-09 (+6d) | 2026-11-17 → 2026-11-23 (+6d) |  | -96.6d → -102d |
| 13 | **Potable Water Network Zone 1** |  | 2026-12-19 → 2026-12-24 (+5d) |  |  |
| 1 | **Pipe Installation Works** |  | 2026-11-01 → 2026-11-08 (+7d) |  |  |
| MOD-PWN-PI-383 | Lean Concrete / Pipe Bedding Preparation for Potable Water Network Zone 1 |  | 2026-10-31 → 2026-11-07 (+7d) |  | 59.38d → 52.98d |
| MOD-PWN-PI-393 | HDPE Pipe Laying (200 mm to 710 mm) for Potable Water Network Zone 1 |  | 2026-11-01 → 2026-11-07 (+6d) |  | 59.38d → 52.98d |
| MOD-PWN-PI-413 | Coating / Wrapping for Potable Water Network Zone 1 |  | 2026-11-01 → 2026-11-08 (+7d) |  | 59.38d → 52.98d |
| MOD-PWN-PI-403 | Test (Pressure-slope) for Potable Water Network Zone 1 |  | 2026-11-01 → 2026-11-07 (+6d) |  | 59.38d → 52.98d |
| MOD-PWN-PI-423 | Backfilling & Warrning Tape for Potable Water Network Zone 1 |  | 2026-11-01 → 2026-11-08 (+7d) |  | 59.38d → 52.98d |
| 2 | **Valve Installation & Chambers** |  | 2026-11-03 → 2026-11-09 (+6d) |  |  |
| MOD-PWN-VC-004 | Valve Chamber Excavation for Potable Water Network Zone 1 |  | 2026-10-31 → 2026-11-07 (+7d) |  | 31.1d → 25.7d |
| MOD-PWN-VC-005 | RC Slab, Walls, or Precast Chambers for Potable Water Network Zone 1 |  | 2026-11-01 → 2026-11-07 (+6d) | 95% → 96% | 49.97d → 44.72d |
| MOD-PWN-VC-001 | Gate Valves (225–710 mm) for Potable Water Network Zone 1 |  | 2026-11-01 → 2026-11-07 (+6d) | 95% → 96% | 49.92d → 44.6d |
| MOD-PWN-VC-003 | 3-exit (2 x 2.5-inch and 1 x 4-inch) dry vacuum cylinder detachable fire nozzle for Potable Water Network Zone 1 |  | 2026-11-01 → 2026-11-07 (+6d) |  | 49.92d → 44.6d |
| MOD-PWN-VC-002 | Butterfly Valves (355, 500, 630 mm) for Potable Water Network Zone 1 |  | 2026-11-01 → 2026-11-07 (+6d) | 95% → 96% | 49.92d → 44.6d |
| MOD-PWN-VC-006 | Fixing Covers, Gratings, Frames for Potable Water Network Zone 1 |  | 2026-11-01 → 2026-11-07 (+6d) | 90% → 92% | 49.92d → 44.6d |
| MOD-PWN-VC-007 | Tagging & Painting for Potable Water Network Zone 1 | 2026-11-01 → 2026-11-07 (+6d) | 2026-11-03 → 2026-11-09 (+6d) |  | 49.92d → 44.6d |
| 3 | **Flow Meter Installation** |  | 2026-12-19 → 2026-12-24 (+5d) |  |  |
| MOD-PWN-FM-002 | RC or Precast Chamber Construction for Potable Water Network Zone 1 |  | 2026-11-03 → 2026-11-10 (+7d) |  | 31.1d → 25.7d |
| MOD-PWN-FM-003 | Flowmeter Installation & Pipe Integration for Potable Water Network Zone 1 |  | 2026-12-06 → 2026-12-12 (+6d) |  | 11.05d → 5.65d |
| MOD-PWN-FM-004 | Wiring/Cabling if applicable for Potable Water Network Zone 1 | 2026-12-06 → 2026-12-12 (+6d) | 2026-12-15 → 2026-12-21 (+6d) |  | 11.05d → 5.65d |
| MOD-PWN-FM-005 | Calibration & Commissioning for Potable Water Network Zone 1 | 2026-12-15 → 2026-12-21 (+6d) | 2026-12-19 → 2026-12-24 (+5d) |  | 11.05d → 5.65d |
| 4 | **Washout & Air Valve Chambers** |  | 2026-11-08 → 2026-11-12 (+4d) |  |  |
| MOD-PWN-WA-003 | Pipe Work for Potable Water Network Zone 1 |  | 2026-11-01 → 2026-11-07 (+6d) | 91% → 93% | 46.2d → 42.04d |
| MOD-PWN-WA-004 | Washout (Valve + Outlet) Installation for Potable Water Network Zone 1 |  | 2026-11-02 → 2026-11-08 (+6d) | 90% → 92% | 46.2d → 42.04d |
| MOD-PWN-WA-005 | Air Valve Rooms (Valve + Outlet) Installation for Potable Water Network Zone 1 |  | 2026-11-03 → 2026-11-09 (+6d) | 84% → 92% | 46.2d → 42.04d |
| MOD-PWN-WA-006 | Covers, Ladders & Tags for Potable Water Network Zone 1 |  | 2026-11-04 → 2026-11-09 (+5d) | 85% → 92% | 46.2d → 42.04d |
| MOD-PWN-WA-007 | Backfilling & Final Finishing for Potable Water Network Zone 1 | 2026-11-04 → 2026-11-09 (+5d) | 2026-11-08 → 2026-11-12 (+4d) |  | 46.2d → 42.04d |
| 7 | **Irrigation Network Zone 1** |  | 2026-12-03 → 2026-12-09 (+6d) |  |  |
| 1 | **Excavation, Pipe Laying & Backfilling** |  | 2026-11-01 → 2026-11-07 (+6d) |  |  |
| MOD-IRN-EB-400 | Lean Concrete / Pipe Bedding with Type B Material for Irrigation Network Zone 1 |  | 2026-10-31 → 2026-11-07 (+7d) |  | 60.26d → 53.86d |
| MOD-IRN-EB-410 | HDPE Pipe Laying (125 mm to 630 mm) for Irrigation Network Zone 1 |  | 2026-10-31 → 2026-11-07 (+7d) |  | 60.26d → 53.86d |
| MOD-IRN-EB-420 | Test (Pressure-slope) for Irrigation Network Zone 1 |  | 2026-10-31 → 2026-11-07 (+7d) |  | 60.26d → 53.86d |
| MOD-IRN-EB-430 | Coating / Wrapping for Irrigation Network Zone 1 |  | 2026-10-31 → 2026-11-07 (+7d) |  | 60.26d → 53.86d |
| MOD-IRN-EB-440 | Backfilling & Warrning Tape for Irrigation Network Zone 1 |  | 2026-11-01 → 2026-11-07 (+6d) |  | 60.26d → 53.86d |
| 2 | **Valves and Appurtenances** |  | 2026-11-02 → 2026-11-09 (+7d) |  |  |
| MOD-IRN-VA-001 | Supply & Installation of Valves (Gate Valve) for Irrigation Network Zone 1 |  | 2026-10-31 → 2026-11-07 (+7d) |  | 46.95d → 41.55d |
| MOD-IRN-VA-002 | Supply & Installation of Valves (Butterfly Valve) for Irrigation Network Zone 1 |  | 2026-11-01 → 2026-11-07 (+6d) |  | 46.95d → 41.55d |
| MOD-IRN-VA-003 | Installation of Flanges, Bolts, Collars, Nuts for Irrigation Network Zone 1 |  | 2026-11-01 → 2026-11-07 (+6d) |  | 46.95d → 41.55d |
| MOD-IRN-VA-005 | Support Brackets/Anchor Blocks for Irrigation Network Zone 1 |  | 2026-11-02 → 2026-11-09 (+7d) |  | 50.74d → 45.34d |
| MOD-IRN-VA-004 | Valve Pressure Testing for Irrigation Network Zone 1 |  | 2026-11-02 → 2026-11-08 (+6d) |  | 50.74d → 45.34d |
| 3 | **Valve Rooms** |  | 2026-11-03 → 2026-11-09 (+6d) |  |  |

| ID | Task | Start | Finish | Total float |
| --- | --- | --- | --- | --- |
| MOD-IRN-VR-002 | Blinding Concrete Valve Chamber for Irrigation Network Zone 1 |  | 2026-11-01 → 2026-11-07 (+6d) | 49.96d → 44.56d |
| MOD-IRN-VR-003 | RCC Base Slab & Chamber Walls Valve Chamber for Irrigation Network Zone 1 |  | 2026-11-01 → 2026-11-08 (+7d) | 49.96d → 44.56d |
| MOD-IRN-VR-004 | Block Wall Construction (if any) Valve Chamber for Irrigation Network Zone 1 |  | 2026-11-02 → 2026-11-08 (+6d) | 49.96d → 44.56d |
| MOD-IRN-VR-005 | Installation of Valve inside the Room Valve Chamber for Irrigation Network Zone 1 |  | 2026-11-02 → 2026-11-09 (+7d) | 49.96d → 44.56d |
| MOD-IRN-VR-006 | Fixing Frame & Cover Valve Chamber for Irrigation Network Zone 1 |  | 2026-11-03 → 2026-11-09 (+6d) | 49.96d → 44.56d |
| MOD-IRN-VR-007 | Backfilling and Finishing Valve Chamber for Irrigation Network Zone 1 |  | 2026-11-03 → 2026-11-09 (+6d) | 49.96d → 44.56d |
| 4 | **Washout Chambers** |  | 2026-11-01 → 2026-11-07 (+6d) |  |
| MOD-IRN-WC-005 | Manhole Frame, Cover & Ladder Fixing Washout Chamber for Irrigation Network Zone 1 |  | 2026-11-01 → 2026-11-07 (+6d) | 52.17d → 46.77d |
| MOD-IRN-WC-006 | Backfilling & Reinstatement Washout Chamber for Irrigation Network Zone 1 |  | 2026-11-01 → 2026-11-07 (+6d) | 52.17d → 46.77d |
| 6 | **Flow Meter Chambers** |  | 2026-12-03 → 2026-12-09 (+6d) |  |
| MOD-IRN-FC-003 | Flow Meter Installation (280, 300, 500 mm) Flow Meter Chamber for Irrigation Network Zone 1 |  | 2026-11-29 → 2026-12-06 (+7d) | 24.15d → 18.75d |
| MOD-IRN-FC-004 | Integration with Pipework Flow Meter Chamber for Irrigation Network Zone 1 |  | 2026-11-30 → 2026-12-06 (+6d) | 24.15d → 18.75d |
| MOD-IRN-FC-005 | Testing & Calibration Flow Meter Chamber for Irrigation Network Zone 1 | 2026-11-30 → 2026-12-06 (+6d) | 2026-12-02 → 2026-12-08 (+6d) | 24.15d → 18.75d |
| MOD-IRN-FC-006 | Cover and Access Arrangement Flow Meter Chamber for Irrigation Network Zone 1 | 2026-12-02 → 2026-12-08 (+6d) | 2026-12-03 → 2026-12-09 (+6d) | 24.15d → 18.75d |
| 1 | **General** |  | 2027-10-03 → 2027-10-10 (+7d) |  |
| 11 | **Landscape** |  | 2027-10-03 → 2027-10-10 (+7d) |  |
| 1 | **Supply & Planting of Trees and Shrubs** | 2027-03-31 → 2027-04-07 (+7d) | 2027-07-29 → 2027-08-05 (+7d) |  |
| 15 | **planting of trees, shrubs, and vines** | 2027-03-31 → 2027-04-07 (+7d) | 2027-07-29 → 2027-08-05 (+7d) |  |
| MOD-LNS-PT-002 | Site demarcation and marking of plant locations for Landscape | 2027-03-31 → 2027-04-07 (+7d) | 2027-04-10 → 2027-04-17 (+7d) | -137.9d → -143.3d |
| MOD-LNS-PT-003 | Excavation of planting pits as per specification for Landscape | 2027-04-10 → 2027-04-17 (+7d) | 2027-04-28 → 2027-05-05 (+7d) | -137.9d → -143.3d |
| MOD-LNS-PT-004 | Placement of sweet soil/potting soil as required for Landscape | 2027-04-28 → 2027-05-05 (+7d) | 2027-05-27 → 2027-06-03 (+7d) | -137.9d → -143.3d |
| MOD-LNS-PT-005 | Placement of gravel bed for drainage (if applicable) for Landscape | 2027-05-27 → 2027-06-03 (+7d) | 2027-06-15 → 2027-06-22 (+7d) | -137.9d → -143.3d |
| MOD-LNS-PT-006 | Planting of Palm tree, shrubs and trees for Landscape | 2027-06-15 → 2027-06-22 (+7d) | 2027-06-22 → 2027-06-29 (+7d) | -137.9d → -143.3d |
| MOD-LNS-PT-007 | Backfilling and compacting around the plant base for Landscape | 2027-06-22 → 2027-06-29 (+7d) | 2027-06-27 → 2027-07-04 (+7d) | -82.9d → -88.3d |
| MOD-LNS-PT-008 | Installation of semi-permeable membrane (if required) for Landscape | 2027-06-27 → 2027-07-04 (+7d) | 2027-07-15 → 2027-07-22 (+7d) | -82.9d → -88.3d |
| MOD-LNS-PT-009 | Initial watering and mulching for Landscape | 2027-07-15 → 2027-07-22 (+7d) | 2027-07-25 → 2027-08-01 (+7d) | -82.9d → -88.3d |
| MOD-LNS-PT-010 | Labeling/tagging (if specified) for Landscape | 2027-07-25 → 2027-08-01 (+7d) | 2027-07-29 → 2027-08-05 (+7d) | -82.9d → -88.3d |
| 16 | **Gravel Layer and Bed Preparation** |  | 2027-04-24 → 2027-05-01 (+7d) |  |
| 17 | **Installation of gravel layers and soil beds to support planting and drainage.** |  | 2027-04-24 → 2027-05-01 (+7d) |  |
| MOD-LNS-GL-004 | Placement of 50mm gravel layer for green areas for Landscape | 2027-03-20 → 2027-03-27 (+7d) | 2027-03-31 → 2027-04-07 (+7d) | -137.9d → -143.3d |
| MOD-LNS-GL-005 | Placement of 150mm gravel bed for drainage network for Landscape | 2027-03-31 → 2027-04-07 (+7d) | 2027-04-07 → 2027-04-14 (+7d) | -137.9d → -143.3d |
| MOD-LNS-GL-006 | Spreading and compacting the gravel for Landscape | 2027-04-07 → 2027-04-14 (+7d) | 2027-04-14 → 2027-04-21 (+7d) | -3.9d → -9.3d |
| MOD-LNS-GL-007 | Overlay of semi-permeable membrane (if applicable) for Landscape | 2027-04-14 → 2027-04-21 (+7d) | 2027-04-19 → 2027-04-26 (+7d) | -3.9d → -9.3d |
| MOD-LNS-GL-008 | Spreading of potting soil/sweet soil as top layer for Landscape | 2027-04-19 → 2027-04-26 (+7d) | 2027-04-24 → 2027-05-01 (+7d) | -3.9d → -9.3d |
| 2 | **Landscape Irrigation System** | 2027-06-22 → 2027-06-29 (+7d) | 2027-10-03 → 2027-10-10 (+7d) |  |
| 17 | **Design, supply, and installation of irrigation lines for arterial road landscape zones.** | 2027-06-22 → 2027-06-29 (+7d) | 2027-10-03 → 2027-10-10 (+7d) |  |
| MOD-LNS-LI-002 | Approval of design and layout by Owner/Engineer for Landscape | 2027-06-22 → 2027-06-29 (+7d) | 2027-06-30 → 2027-07-07 (+7d) | -137.9d → -143.3d |
| MOD-LNS-LI-003 | Excavation for main and lateral lines for Landscape | 2027-06-30 → 2027-07-07 (+7d) | 2027-07-17 → 2027-07-24 (+7d) | -137.9d → -143.3d |
| MOD-LNS-LI-004 | Supply and installation of irrigation piping and fittings for Landscape | 2027-07-17 → 2027-07-24 (+7d) | 2027-07-24 → 2027-07-31 (+7d) | -137.9d → -143.3d |
| MOD-LNS-LI-005 | Valve box installation and controller placement for Landscape | 2027-07-24 → 2027-07-31 (+7d) | 2027-08-09 → 2027-08-16 (+7d) | -137.9d → -143.3d |
| MOD-LNS-LI-006 | Connection to water source and pump system (if applicable) for Landscape | 2027-08-09 → 2027-08-16 (+7d) | 2027-09-01 → 2027-09-08 (+7d) | -137.9d → -143.3d |
| MOD-LNS-LI-007 | Testing of the irrigation network for leaks and performance for Landscape | 2027-09-01 → 2027-09-08 (+7d) | 2027-09-05 → 2027-09-12 (+7d) | -137.9d → -143.3d |
| MOD-LNS-LI-008 | Backfilling and surface reinstatement for Landscape | 2027-09-05 → 2027-09-12 (+7d) | 2027-09-26 → 2027-10-03 (+7d) | -137.9d → -143.3d |
| MOD-LNS-LI-009 | Commissioning and operational approval for Landscape | 2027-09-26 → 2027-10-03 (+7d) | 2027-10-03 → 2027-10-10 (+7d) | -137.9d → -143.3d |
| 9 | **Testing & Commissioning & Closeout** |  | 2027-10-27 → 2027-11-03 (+7d) |  |
| 1 | **Testing & Commissioning** |  | 2027-06-13 → 2027-06-20 (+7d) |  |
| 1 | **Zone 3** |  | 2027-06-13 → 2027-06-20 (+7d) |  |
| A103610 | Testing and Commissioning for Irrigation Network Zone 3 |  | 2027-01-02 → 2027-01-09 (+7d) | 55.63d → 50.23d |
| A103590 | Testing and Commissioning for Rain Water Drainage Network Zone 3 |  | 2026-12-28 → 2027-01-04 (+7d) | 59.98d → 54.58d |
| A103600 | Testing and Commissioning for Potable Water Network Zone 3 |  | 2026-12-15 → 2026-12-21 (+6d) | 71.43d → 66.03d |
| A102060 | Testing and Commissioning for Sewerage Network Zone 3 |  | 2027-01-11 → 2027-01-18 (+7d) | 48.08d → 42.18d |
| A103620 | Testing and Commissioning for Pumping Station Zone 3 | 2027-05-19 → 2027-05-26 (+7d) | 2027-06-13 → 2027-06-20 (+7d) | -63.95d → -69.35d |
| 2 | **Zone 2** |  | 2027-01-12 → 2027-01-18 (+6d) |  |
| A103660 | Testing and Commissioning for Potable Water Network Zone 2 |  | 2026-12-24 → 2026-12-30 (+6d) | 63.45d → 58.05d |
| A103670 | Testing and Commissioning for Irrigation Network Zone 2 |  | 2026-12-12 → 2026-12-17 (+5d) | 74.55d → 69.15d |
| A103640 | Testing and Commissioning for Sewerage Network Zone 2 |  | 2027-01-12 → 2027-01-18 (+6d) | 47.17d → 41.8d |
| A103650 | Testing and Commissioning for Rain Water Drainage Network Zone 2 |  | 2026-12-15 → 2026-12-22 (+7d) | 70.77d → 65.37d |
| 3 | **Zone 1** |  | 2027-04-22 → 2027-04-29 (+7d) |  |
| A103710 | Testing and Commissioning for Potable Water Network Zone 1 |  | 2026-12-23 → 2026-12-29 (+6d) | 64.05d → 58.65d |
| A103700 | Testing and Commissioning for Rain Water Drainage Network Zone 1 |  | 2026-12-07 → 2026-12-13 (+6d) | 78.18d → 72.78d |
| A103720 | Testing and Commissioning for Irrigation Network Zone 1 |  | 2026-12-10 → 2026-12-16 (+6d) | 75.05d → 69.65d |
| A103690 | Testing and Commissioning for Sewerage Network Zone 1 |  | 2027-01-18 → 2027-01-24 (+6d) | 42.35d → 36.85d |
| A103730 | Testing and Commissioning for Pumping Station Zone 1 | 2027-04-11 → 2027-04-18 (+7d) | 2027-04-22 → 2027-04-29 (+7d) | -23.21d → -29.21d |
| 2 | **As-Built** |  | 2027-10-27 → 2027-11-03 (+7d) |  |
| HO-0001 | Mechanical as-built Submittals & Approval | 2027-06-13 → 2027-06-20 (+7d) | 2027-07-07 → 2027-07-14 (+7d) | -63.95d → -69.35d |
| HO-3 | Electrical as-built Submittals & Approval | 2027-06-13 → 2027-06-20 (+7d) | 2027-07-07 → 2027-07-14 (+7d) | -42.95d → -48.35d |
| HO-33 | Landscape as-built Submittals & Approval | 2027-10-03 → 2027-10-10 (+7d) | 2027-10-27 → 2027-11-03 (+7d) | -137.9d → -143.3d |
| 3 | **Handover** | 2027-07-07 → 2027-07-14 (+7d) | 2027-08-01 → 2027-08-08 (+7d) |  |
| HO-0003 | Handover & Demobilization | 2027-07-07 → 2027-07-14 (+7d) | 2027-08-01 → 2027-08-08 (+7d) | -63.95d → -69.35d |

## Version 8 (data date 2026-11-14, saved 2026-11-17, file DAM3-02-008-WPR.66 - 2026-11-15.xer)

Last finish 2027-11-03 → 2027-11-10 (+7d).

Changed:

| ID | Task | Start | Finish | Total float |
| --- | --- | --- | --- | --- |
| 1 | **Milestones** |  | 2027-11-03 → 2027-11-10 (+7d) |  |
| MIL-0003 | Submission of Report, Work Plan, and Schedule | 2026-11-07 → 2026-11-14 (+7d) | 2026-11-07 → 2026-11-14 (+7d) | 193d → 186d |
| MIL-0004 | Submission and Approval of Drawings and Specifications | 2026-11-12 → 2026-11-19 (+7d) | 2026-11-12 → 2026-11-19 (+7d) | -196d → -203d |
| MIL-0006 | Completion of Rainwater Drainage Works | 2026-12-31 → 2027-01-07 (+7d) | 2026-12-31 → 2027-01-07 (+7d) | -157.57d → -164.57d |
| MIL-0005 | Completion of Water Networks and Tanks | 2027-01-26 → 2027-02-02 (+7d) | 2027-01-26 → 2027-02-02 (+7d) | -26.5d → -33.5d |
| MIL-0007 | Completion of All Project Services | 2027-10-19 → 2027-10-26 (+7d) | 2027-10-19 → 2027-10-26 (+7d) | -154d → -161d |
| MIL-0008 | Final Handover | 2027-11-03 → 2027-11-10 (+7d) | 2027-11-03 → 2027-11-10 (+7d) | -168.38d → -175.38d |
| 2 | **Mobilization** |  | 2027-01-26 → 2027-02-02 (+7d) |  |
| 8 | **Deliverables** |  | 2027-01-26 → 2027-02-02 (+7d) |  |
| 1 | **Submittals** |  | 2027-01-14 → 2027-01-21 (+7d) |  |
| S10002 | Prepare & Submit Method of Statement |  | 2026-11-10 → 2026-11-17 (+7d) | 38.4d → 32.4d |
| S100015 | Prepare & Submit Pre-commissioning/ Commissioning Plan/ Startup/ Testing / Handover Plan | 2026-11-07 → 2026-11-14 (+7d) | 2027-01-14 → 2027-01-21 (+7d) | -22.6d → -28.6d |
| 2 | **Approvals** |  | 2027-01-26 → 2027-02-02 (+7d) |  |
| S100106 | Approval of Method of Statement |  | 2026-11-16 → 2026-11-23 (+7d) | 38.4d → 32.4d |
| S100086 | Approval of Pre-commissioning/ Commissioning Plan/ Startup/ Testing / Handover Plan | 2027-01-16 → 2027-01-23 (+7d) | 2027-01-26 → 2027-02-02 (+7d) | -22.6d → -28.6d |
| 7 | **Engineering** |  | 2026-11-18 → 2026-11-25 (+7d) |  |
| 3 | **Shop Drawing** |  | 2026-11-12 → 2026-11-19 (+7d) |  |
| 2 | **Approvals** |  | 2026-11-12 → 2026-11-19 (+7d) |  |
| A1630 | Landscape details approval |  | 2026-11-12 → 2026-11-19 (+7d) | -137d → -142d |
| 1 | **Material Submittal & Approval** |  | 2026-11-18 → 2026-11-25 (+7d) |  |
| 20 | **Long Lead Items** |  | 2026-11-11 → 2026-11-18 (+7d) |  |
| 13 | **Generators & Fuel Tanks - PS & Control Bldg backup power** |  | 2026-11-11 → 2026-11-18 (+7d) |  |
| A102930 | Material Submittal for Generators & Fuel Tanks - PS & Control Bldg backup power |  | 2026-11-10 → 2026-11-17 (+7d) | -24.21d → -29.21d |
| A102940 | Material Approval for Generators & Fuel Tanks - PS & Control Bldg backup power |  | 2026-11-11 → 2026-11-18 (+7d) | -24.21d → -29.21d |
| 21 | **Short Lead Items** |  | 2026-11-18 → 2026-11-25 (+7d) |  |
| 15 | **Interlock Tiles / Curbstone - Roads, Sidewalks, Landscape** |  | 2026-11-17 → 2026-11-24 (+7d) |  |
| A103180 | Material Approval for Interlock Tiles / Curbstone - Roads, Sidewalks, Landscape |  | 2026-11-17 → 2026-11-24 (+7d) | 6.2d → 1.2d |
| 16 | **Landscaping Materials (Soil, Plants) - Final works, softscape** |  | 2026-11-18 → 2026-11-25 (+7d) |  |
| A103200 | Material Approval for Landscaping Materials (Soil, Plants) - Final works, softscape |  | 2026-11-18 → 2026-11-25 (+7d) | -120.3d → -125.3d |
| 3 | **Procurement** |  | 2027-03-27 → 2027-04-03 (+7d) |  |
| 1 | **Prequalification** |  | 2026-11-11 → 2026-11-18 (+7d) |  |
| 21 | **Short Lead Items** |  | 2026-11-11 → 2026-11-18 (+7d) |  |
| 15 | **Interlock Tiles / Curbstone - Roads, Sidewalks, Landscape** |  | 2026-11-11 → 2026-11-18 (+7d) |  |
| A103560 | Prequalification Approval for Interlock Tiles / Curbstone - Roads, Sidewalks, Landscape |  | 2026-11-11 → 2026-11-18 (+7d) | 8.2d → 2.2d |
| 16 | **Landscaping Materials (Soil, Plants) - Final works, softscape** |  | 2026-11-11 → 2026-11-18 (+7d) |  |
| A103580 | Prequalification Approval for Landscaping Materials (Soil, Plants) - Final works, softscape |  | 2026-11-11 → 2026-11-18 (+7d) | -142.3d → -148.3d |
| 20 | **Long Lead Items** |  | 2027-01-04 → 2027-01-11 (+7d) |  |
| 2 | **Drainage Channel Covers (GRP / DI) - For storm and wastewater** |  | 2026-11-08 → 2026-11-15 (+7d) |  |
| A102570 | Custom Clearance for Drainage Channel Covers (GRP / DI) - For storm and wastewater |  | 2026-11-07 → 2026-11-14 (+7d) | -97.31d → -103.31d |
| A1230 | Manufacturing for Drainage Channel Covers (GRP / DI) - For storm and wastewater |  | 2026-11-07 → 2026-11-14 (+7d) | -97.31d → -103.31d |
| A1240 | Delivery for Drainage Channel Covers (GRP / DI) - For storm and wastewater |  | 2026-11-07 → 2026-11-14 (+7d) | -97.31d → -103.31d |
| A102580 | Staging Time for Drainage Channel Covers (GRP / DI) - For storm and wastewater |  | 2026-11-08 → 2026-11-15 (+7d) | -97.31d → -103.31d |
| 3 | **Control & Instrumentation Devices - Flow meters, pressure sensors** |  | 2026-12-03 → 2026-12-10 (+7d) |  |
| A1530 | Manufacturing for Control & Instrumentation Devices - Flow meters, pressure sensors |  | 2026-11-08 → 2026-11-15 (+7d) | -69.35d → -75.35d |
| A102610 | Custom Clearance for Control & Instrumentation Devices - Flow meters, pressure sensors |  | 2026-11-08 → 2026-11-15 (+7d) | -69.35d → -75.35d |
| A1570 | Delivery for Control & Instrumentation Devices - Flow meters, pressure sensors |  | 2026-11-10 → 2026-11-17 (+7d) | -69.35d → -75.35d |
| A102620 | Staging Time for Control & Instrumentation Devices - Flow meters, pressure sensors |  | 2026-12-03 → 2026-12-10 (+7d) | -69.35d → -75.35d |
| 10 | **Pumps (Sewage, Irrigation, Booster) - Especially for pumping stations** |  | 2026-11-11 → 2026-11-18 (+7d) |  |
| A102150 | Manufacturing for Pumps (Sewage, Irrigation, Booster) - Especially for pumping stations |  | 2026-11-07 → 2026-11-14 (+7d) | 18.8d → 12.8d |
| A102170 | Delivery for Pumps (Sewage, Irrigation, Booster) - Especially for pumping stations |  | 2026-11-09 → 2026-11-16 (+7d) | 18.8d → 12.8d |
| A102630 | Custom Clearance for Pumps (Sewage, Irrigation, Booster) - Especially for pumping stations |  | 2026-11-08 → 2026-11-15 (+7d) | 18.8d → 12.8d |
| A102640 | Staging Time for Pumps (Sewage, Irrigation, Booster) - Especially for pumping stations |  | 2026-11-11 → 2026-11-18 (+7d) | 18.8d → 12.8d |
| 13 | **Generators & Fuel Tanks - PS & Control Bldg backup power** |  | 2026-11-30 → 2026-12-07 (+7d) |  |
| A102230 | Manufacturing for Generators & Fuel Tanks - PS & Control Bldg backup power |  | 2026-11-15 → 2026-11-22 (+7d) | -29.21d → -35.21d |
| A102250 | Delivery for Generators & Fuel Tanks - PS & Control Bldg backup power |  | 2026-11-16 → 2026-11-23 (+7d) | -29.21d → -35.21d |
| A102670 | Custom Clearance for Generators & Fuel Tanks - PS & Control Bldg backup power |  | 2026-11-15 → 2026-11-22 (+7d) | -29.21d → -35.21d |
| A102680 | Staging Time for Generators & Fuel Tanks - PS & Control Bldg backup power |  | 2026-11-30 → 2026-12-07 (+7d) | -29.21d → -35.21d |
| 11 | **Odor Control Units - Sewer PS-specific** |  | 2027-01-04 → 2027-01-11 (+7d) |  |
| A102720 | Staging Time for Odor Control Units - Sewer PS-specific | 2026-11-30 → 2026-12-07 (+7d) | 2027-01-04 → 2027-01-11 (+7d) | -29.21d → -35.21d |
| 21 | **Short Lead Items** |  | 2027-03-27 → 2027-04-03 (+7d) |  |
| 1 | **Asphalt** |  | 2027-01-05 → 2027-01-12 (+7d) |  |
| A102730 | Delivery for Asphalt Phase 1 |  | 2027-01-05 → 2027-01-12 (+7d) | 27.58d → 21.58d |
| A103740 | Delivery for Asphalt Phase 2 |  | 2027-01-05 → 2027-01-12 (+7d) | 27.58d → 21.58d |
| A103750 | Delivery for Asphalt Phase 3 |  | 2027-01-05 → 2027-01-12 (+7d) | 71.66d → 65.66d |
| 15 | **Interlock Tiles / Curbstone - Roads, Sidewalks, Landscape** |  | 2026-12-07 → 2026-12-14 (+7d) |  |
| A102380 | Manufacturing for Interlock Tiles / Curbstone - Roads, Sidewalks, Landscape |  | 2026-11-17 → 2026-11-24 (+7d) | 7.2d → 1.2d |
| A102400 | Delivery for Interlock Tiles / Curbstone - Roads, Sidewalks, Landscape |  | 2026-11-18 → 2026-11-25 (+7d) | 7.2d → 1.2d |
| A102820 | Staging Time for Interlock Tiles / Curbstone - Roads, Sidewalks, Landscape |  | 2026-12-07 → 2026-12-14 (+7d) | 7.2d → 1.2d |
| 16 | **Landscaping Materials (Soil, Plants) - Final works, softscape** | 2026-11-18 → 2026-11-25 (+7d) | 2027-03-27 → 2027-04-03 (+7d) |  |
| A102350 | Issue PO for Landscaping Materials (Soil, Plants) - Final works, softscape | 2026-11-18 → 2026-11-25 (+7d) | 2026-11-23 → 2026-11-30 (+7d) | -143.3d → -149.3d |

| ID | Task | Start | Finish | Complete | Total float |
| --- | --- | --- | --- | --- | --- |
| A102360 | Manufacturing for Landscaping Materials (Soil, Plants) - Final works, softscape | 2026-11-23 → 2026-11-30 (+7d) | 2027-02-01 → 2027-02-10 (+9d) |  | -143.3d → -149.3d |
| A102390 | Delivery for Landscaping Materials (Soil, Plants) - Final works, softscape | 2027-02-01 → 2027-02-10 (+9d) | 2027-03-27 → 2027-04-03 (+7d) |  | -143.3d → -149.3d |
| 4 | **Construction** |  | 2027-10-19 → 2027-10-26 (+7d) |  |  |
| 7 | **Zone 3** |  | 2027-06-30 → 2027-07-07 (+7d) |  |  |
| 2 | **Sewerage Network Zone 3** |  | 2027-05-26 → 2027-06-02 (+7d) |  |  |
| 3 | **Pipework: Supply, Installation, and Testing** |  | 2026-11-30 → 2026-12-07 (+7d) |  |  |
| 3 | **HDPE Pressure Pipes Installation (250mm–630mm)** |  | 2026-11-30 → 2026-12-07 (+7d) |  |  |
| MOD-SWN-PW-425 | Test (Pressure - Slope) HDPE for Sewerage Network Zone 3 |  | 2026-11-09 → 2026-11-16 (+7d) |  | 112.38d → 105.38d |
| MOD-SWN-PW-435 | Coating / Wrapping HDPE for Sewerage Network Zone 3 |  | 2026-11-15 → 2026-11-22 (+7d) |  | 112.38d → 105.38d |
| MOD-SWN-PW-395 | Backfilling & Warrning Tape HDPE for Sewerage Network Zone 3 | 2026-11-16 → 2026-11-23 (+7d) | 2026-11-30 → 2026-12-07 (+7d) |  | 112.38d → 105.38d |
| 4 | **Fittings and Valves** | 2026-11-07 → 2026-11-14 (+7d) | 2026-12-07 → 2026-12-14 (+7d) |  |  |
| MOD-SWN-FV-55 | Supply & Installation of HDPE Elbows for Sewerage Network Zone 3 | 2026-11-07 → 2026-11-14 (+7d) | 2026-11-12 → 2026-11-19 (+7d) |  | 75.08d → 69.08d |
| MOD-SWN-FV-65 | Gate Valves Installation for Sewerage Network Zone 3 | 2026-11-14 → 2026-11-21 (+7d) | 2026-11-17 → 2026-11-24 (+7d) |  | 75.08d → 69.08d |
| MOD-SWN-FV-75 | Drain Valves Installation for Sewerage Network Zone 3 | 2026-11-18 → 2026-11-25 (+7d) | 2026-11-22 → 2026-11-29 (+7d) |  | 75.08d → 69.08d |
| MOD-SWN-FV-85 | Air Breather & Air Release Valves Installation for Sewerage Network Zone 3 | 2026-11-23 → 2026-11-30 (+7d) | 2026-12-03 → 2026-12-10 (+7d) |  | 75.08d → 69.08d |
| MOD-SWN-FV-95 | Jointing & Piping Accessories Installation for Sewerage Network Zone 3 | 2026-12-05 → 2026-12-12 (+7d) | 2026-12-07 → 2026-12-14 (+7d) |  | 75.08d → 69.08d |
| 6 | **Valve & Flow Meter Chambers** |  | 2027-01-14 → 2027-01-21 (+7d) |  |  |
| 1 | **Valve Chambers Construction** |  | 2026-12-18 → 2026-12-25 (+7d) |  |  |
| MOD-SWN-PW-815 | Excavation Valve Chamber for Sewerage Network Zone 3 |  | 2026-11-14 → 2026-11-21 (+7d) |  | 67.48d → 61d |
| MOD-SWN-PW-825 | Lean Concrete / Bedding Valve Chamber for Sewerage Network Zone 3 |  | 2026-11-23 → 2026-11-30 (+7d) |  | 67.48d → 61d |
| MOD-SWN-VF-84 | Valve Chambers Construction Valve Chamber for Sewerage Network Zone 3 |  | 2026-11-26 → 2026-12-03 (+7d) |  | 67.48d → 61d |
| MOD-SWN-PW-835 | Test Valve Chamber for Sewerage Network Zone 3 |  | 2026-12-03 → 2026-12-10 (+7d) |  | 95.13d → 88.13d |
| MOD-SWN-PW-805 | Backfilling Valve Chamber for Sewerage Network Zone 3 | 2026-12-03 → 2026-12-10 (+7d) | 2026-12-18 → 2026-12-25 (+7d) |  | 95.13d → 88.13d |
| 2 | **Water Drain Chambers Construction** |  | 2027-01-04 → 2027-01-11 (+7d) |  |  |
| MOD-SWN-PW-855 | Excavation Water Drain Chamber for Sewerage Network Zone 3 |  | 2026-11-12 → 2026-11-19 (+7d) | 75% → 80% | 74.38d → 67.9d |
| MOD-SWN-PW-865 | Lean Concrete / Bedding Water Drain Chamber for Sewerage Network Zone 3 |  | 2026-11-19 → 2026-11-26 (+7d) | 65% → 70% | 74.38d → 67.9d |
| MOD-SWN-VF-94 | Water Drain Chambers Construction Water Drain Chamber for Sewerage Network Zone 3 |  | 2026-12-05 → 2026-12-12 (+7d) | 55% → 70% | 67.48d → 61d |
| MOD-SWN-PW-875 | Test Water Drain Chamber for Sewerage Network Zone 3 | 2026-12-05 → 2026-12-12 (+7d) | 2026-12-20 → 2026-12-27 (+7d) |  | 78.33d → 71.33d |
| MOD-SWN-PW-845 | Backfilling Water Drain Chamber for Sewerage Network Zone 3 | 2026-12-20 → 2026-12-27 (+7d) | 2027-01-04 → 2027-01-11 (+7d) |  | 78.33d → 71.33d |
| 3 | **Discharge Chambers Construction** |  | 2027-01-09 → 2027-01-16 (+7d) |  |  |
| MOD-SWN-PW-895 | Excavation Discharge Chamber for Sewerage Network Zone 3 |  | 2026-11-14 → 2026-11-21 (+7d) |  | 79.78d → 73.72d |
| MOD-SWN-PW-905 | Lean Concrete / Bedding Discharge Chamber for Sewerage Network Zone 3 |  | 2026-11-22 → 2026-11-29 (+7d) |  | 79.78d → 73.72d |
| MOD-SWN-VF-104 | Discharge Chambers Construction Discharge Chamber for Sewerage Network Zone 3 |  | 2026-12-10 → 2026-12-17 (+7d) |  | 67.48d → 61d |
| MOD-SWN-PW-915 | Test Discharge Chamber for Sewerage Network Zone 3 | 2026-12-10 → 2026-12-17 (+7d) | 2026-12-25 → 2027-01-01 (+7d) |  | 72.48d → 66d |
| MOD-SWN-PW-885 | Backfilling Discharge Chamber for Sewerage Network Zone 3 | 2026-12-25 → 2027-01-01 (+7d) | 2027-01-09 → 2027-01-16 (+7d) |  | 72.48d → 66d |
| 4 | **Flow Meter Chambers Construction** |  | 2027-01-14 → 2027-01-21 (+7d) |  |  |
| MOD-SWN-PW-935 | Excavation Flow Meter Chamber for Sewerage Network Zone 3 |  | 2026-11-15 → 2026-11-22 (+7d) |  | 80.38d → 73.38d |
| MOD-SWN-PW-945 | Lean Concrete / Bedding Flow Meter Chamber for Sewerage Network Zone 3 |  | 2026-11-27 → 2026-12-04 (+7d) |  | 80.38d → 73.38d |
| MOD-SWN-VF-114 | Flow Meter Chambers Construction Flow Meter Chamber for Sewerage Network Zone 3 | 2026-12-10 → 2026-12-17 (+7d) | 2026-12-15 → 2026-12-22 (+7d) |  | 67.48d → 61d |
| MOD-SWN-PW-955 | Test Flow Meter Chamber for Sewerage Network Zone 3 | 2026-12-15 → 2026-12-22 (+7d) | 2026-12-30 → 2027-01-06 (+7d) |  | 67.48d → 61d |
| MOD-SWN-PW-925 | Backfilling Flow Meter Chamber for Sewerage Network Zone 3 | 2026-12-30 → 2027-01-06 (+7d) | 2027-01-14 → 2027-01-21 (+7d) |  | 67.48d → 61d |
| 7 | **Manholes** |  | 2026-12-28 → 2026-12-29 (+1d) |  |  |
| 2 | **1500mm GRP Manholes (Standard & Backdrop)** |  | 2026-12-18 → 2026-12-23 (+5d) |  |  |
| MOD-SWN-PW-1655 | Excavation 1.5m GRP for Sewerage Network Zone 3 |  | 2026-11-09 → 2026-11-16 (+7d) |  | 84.58d → 83.92d |
| MOD-SWN-PW-1665 | Lean Concrete / Bedding 1.5m GRP for Sewerage Network Zone 3 |  | 2026-11-14 → 2026-11-19 (+5d) |  | 84.58d → 83.92d |
| MOD-SWN-MH-195 | 1500mm GRP Manholes (Standard & Backdrop) 1.5m GRP for Sewerage Network Zone 3 |  | 2026-11-18 → 2026-11-23 (+5d) |  | 84.58d → 83.92d |
| MOD-SWN-PW-1675 | Test 1.5m GRP for Sewerage Network Zone 3 | 2026-11-18 → 2026-11-23 (+5d) | 2026-12-03 → 2026-12-08 (+5d) |  | 94.83d → 89.72d |
| MOD-SWN-PW-1645 | Backfilling 1.5m GRP for Sewerage Network Zone 3 | 2026-12-03 → 2026-12-08 (+5d) | 2026-12-18 → 2026-12-23 (+5d) |  | 94.83d → 89.72d |
| 3 | **1800mm GRP Manholes (Standard & Backdrop)** |  | 2026-12-22 → 2026-12-27 (+5d) |  |  |
| MOD-SWN-PW-1695 | Excavation 1.8m GRP for Sewerage Network Zone 3 |  | 2026-11-08 → 2026-11-15 (+7d) |  | 90.25d → 88.54d |
| MOD-SWN-PW-1705 | Lean Concrete / Bedding 1.8m GRP for Sewerage Network Zone 3 |  | 2026-11-12 → 2026-11-19 (+7d) |  | 90.25d → 88.54d |
| MOD-SWN-MH-205 | 1800mm GRP Manholes (Standard & Backdrop) 1.8m GRP for Sewerage Network Zone 3 |  | 2026-11-22 → 2026-11-27 (+5d) |  | 84.58d → 83.92d |
| MOD-SWN-PW-1715 | Test 1.8m GRP for Sewerage Network Zone 3 | 2026-11-22 → 2026-11-27 (+5d) | 2026-12-07 → 2026-12-12 (+5d) |  | 90.58d → 86.32d |
| MOD-SWN-PW-1685 | Backfilling 1.8m GRP for Sewerage Network Zone 3 | 2026-12-07 → 2026-12-12 (+5d) | 2026-12-22 → 2026-12-27 (+5d) |  | 90.58d → 86.32d |
| 4 | **2000mm GRP Manholes (Standard & Backdrop)** |  | 2026-12-28 → 2026-12-29 (+1d) |  |  |
| MOD-SWN-PW-1735 | Excavation 2m GRP for Sewerage Network Zone 3 |  | 2026-11-08 → 2026-11-15 (+7d) |  | 93.66d → 91.31d |
| MOD-SWN-PW-1745 | Lean Concrete / Bedding 2m GRP for Sewerage Network Zone 3 |  | 2026-11-13 → 2026-11-19 (+6d) |  | 93.66d → 91.31d |
| MOD-SWN-MH-215 | 2000mm GRP Manholes (Standard & Backdrop) 2m GRP for Sewerage Network Zone 3 |  | 2026-11-28 → 2026-11-29 (+1d) |  | 84.58d → 83.92d |
| MOD-SWN-PW-1755 | Test 2m GRP for Sewerage Network Zone 3 | 2026-11-28 → 2026-11-29 (+1d) | 2026-12-13 → 2026-12-14 (+1d) |  | 84.58d → 83.92d |
| MOD-SWN-PW-1725 | Backfilling 2m GRP for Sewerage Network Zone 3 | 2026-12-13 → 2026-12-14 (+1d) | 2026-12-28 → 2026-12-29 (+1d) |  | 84.58d → 83.92d |
| 5 | **Pumping Stations** |  | 2027-05-26 → 2027-06-02 (+7d) |  |  |
| 1 | **Sewage Pumps and MCC System** | 2026-11-30 → 2026-12-07 (+7d) | 2027-01-18 → 2027-01-25 (+7d) |  |  |
| MOD-SWN-PS-644 | Sewage pumps (2x30 l/s, 1x115 l/s) incl. MCC – PS3 for Sewerage Network Zone 3 | 2026-11-30 → 2026-12-07 (+7d) | 2026-12-24 → 2026-12-31 (+7d) |  | 20.79d → 14.79d |
| MOD-SWN-PS-654 | Sewage pumps (2x100 l/s) incl. MCC – PS4 for Sewerage Network Zone 3 | 2026-12-24 → 2026-12-31 (+7d) | 2027-01-18 → 2027-01-25 (+7d) |  | 20.79d → 14.79d |
| 3 | **In-Line Booster Stations** | 2026-11-07 → 2026-11-14 (+7d) | 2027-01-18 → 2027-01-25 (+7d) |  |  |
| MOD-SWN-PS-674 | In-Line Booster Stations - Civil Works for Sewerage Network Zone 3 | 2026-11-07 → 2026-11-14 (+7d) | 2026-11-30 → 2026-12-07 (+7d) |  | 20.6d → 14.6d |
| MOD-SWN-PS-1144 | In-Line Booster Stations - Mechanical Works for Sewerage Network Zone 3 | 2026-12-01 → 2026-12-08 (+7d) | 2026-12-24 → 2026-12-31 (+7d) |  | 20.6d → 14.6d |
| MOD-SWN-PS-1154 | In-Line Booster Stations - Electrical Works for Sewerage Network Zone 3 | 2026-12-26 → 2027-01-02 (+7d) | 2027-01-18 → 2027-01-25 (+7d) |  | 20.6d → 14.6d |
| 7 | **Engine/Motor Control Center Buildings** | 2026-11-07 → 2026-11-14 (+7d) | 2026-11-15 → 2026-11-22 (+7d) |  |  |
| MOD-SWN-PS-934 | MCC Building – PS3 for Sewerage Network Zone 3 | 2026-11-07 → 2026-11-14 (+7d) | 2026-11-07 → 2026-11-14 (+7d) |  | -47.1d → -53.1d |

| ID | Task | Start | Finish | Total float |
| --- | --- | --- | --- | --- |
| MOD-SWN-PS-944 | MCC Building – PS4 for Sewerage Network Zone 3 | 2026-11-08 → 2026-11-15 (+7d) | 2026-11-15 → 2026-11-22 (+7d) | -14.7d → -20.7d |
| 4 | **Valves and Fittings (General Supply & Installation)** |  | 2026-12-10 → 2026-12-17 (+7d) |  |
| MOD-SWN-PS-714 | Valves, fittings, flow meters – PS3 for Sewerage Network Zone 3 |  | 2026-12-05 → 2026-12-12 (+7d) | -69.35d → -75.35d |
| MOD-SWN-PS-724 | Valves, fittings, flow meters – PS4 for Sewerage Network Zone 3 |  | 2026-12-08 → 2026-12-15 (+7d) | -69.35d → -75.35d |
| MOD-SWN-PS-734 | 35mm SS 316 mesh network – PS4 for Sewerage Network Zone 3 |  | 2026-12-10 → 2026-12-17 (+7d) | -69.35d → -75.35d |
| 5 | **Tank with Canopy** | 2026-12-10 → 2026-12-17 (+7d) | 2026-12-24 → 2026-12-31 (+7d) |  |
| MOD-SWN-PS-754 | Tank with canopy (per specs/drawings) - PS4 for Sewerage Network Zone 3 | 2026-12-10 → 2026-12-17 (+7d) | 2026-12-24 → 2026-12-31 (+7d) | -69.35d → -75.35d |
| 6 | **Pump Well and Valve Chambers** | 2026-12-24 → 2026-12-31 (+7d) | 2027-04-12 → 2027-04-19 (+7d) |  |
| MOD-SWN-PS-844 | Pump well & valve chamber structure – PS3 (2 wells, 5x5m, 11m depth) for Sewerage Network Zone 3 | 2026-12-24 → 2026-12-31 (+7d) | 2027-01-18 → 2027-01-25 (+7d) | -69.35d → -75.35d |
| MOD-SWN-PS-854 | Concrete wall (5x5x1m) inside PS3 well for Sewerage Network Zone 3 | 2027-01-18 → 2027-01-25 (+7d) | 2027-01-23 → 2027-01-30 (+7d) | -12.05d → -18.05d |
| MOD-SWN-PS-884 | Pump well & valve chamber structure – PS4 (1 well, 4m, 11m depth) for Sewerage Network Zone 3 | 2027-01-18 → 2027-01-25 (+7d) | 2027-02-17 → 2027-03-02 (+13d) | -69.35d → -75.35d |
| MOD-SWN-PS-864 | Valve chamber – PS3 for Sewerage Network Zone 3 | 2027-01-23 → 2027-01-30 (+7d) | 2027-02-21 → 2027-03-06 (+13d) | -12.05d → -18.05d |
| MOD-SWN-PS-894 | Valve chamber – PS4 for Sewerage Network Zone 3 | 2027-02-17 → 2027-03-02 (+13d) | 2027-03-28 → 2027-04-04 (+7d) | -69.35d → -75.35d |
| MOD-SWN-PS-874 | Flow meter chamber – PS3 for Sewerage Network Zone 3 | 2027-02-21 → 2027-03-06 (+13d) | 2027-03-16 → 2027-03-23 (+7d) | -12.05d → -18.05d |
| MOD-SWN-PS-904 | Flow meter chamber – PS4 for Sewerage Network Zone 3 | 2027-03-28 → 2027-04-04 (+7d) | 2027-04-12 → 2027-04-19 (+7d) | -69.35d → -75.35d |
| 8 | **Odor Control System Base/Plinth** | 2027-05-18 → 2027-05-25 (+7d) | 2027-05-25 → 2027-06-01 (+7d) |  |
| MOD-SWN-PS-954 | Concrete plinth below odor control – PS3 & PS4 for Sewerage Network Zone 3 | 2027-05-18 → 2027-05-25 (+7d) | 2027-05-25 → 2027-06-01 (+7d) | -69.35d → -75.35d |
| 10 | **Lighting Works** |  | 2027-05-26 → 2027-06-02 (+7d) |  |
| MOD-SWN-PS-1024 | 250W Flood Light installation – PS3 & PS4 for Sewerage Network Zone 3 |  | 2027-05-26 → 2027-06-02 (+7d) | -69.35d → -75.35d |
| 11 | **Duct Works** | 2027-04-12 → 2027-04-19 (+7d) | 2027-04-20 → 2027-04-27 (+7d) |  |
| MOD-SWN-PS-1034 | uPVC duct Track 1 – PS3 & PS4 for Sewerage Network Zone 3 | 2027-04-12 → 2027-04-19 (+7d) | 2027-04-13 → 2027-04-20 (+7d) | -69.35d → -75.35d |
| MOD-SWN-PS-1044 | uPVC duct Track 2 – PS3 & PS4 for Sewerage Network Zone 3 | 2027-04-13 → 2027-04-20 (+7d) | 2027-04-15 → 2027-04-22 (+7d) | -69.35d → -75.35d |
| MOD-SWN-PS-1054 | uPVC duct Track 8 – PS3 & PS4 for Sewerage Network Zone 3 | 2027-04-15 → 2027-04-22 (+7d) | 2027-04-20 → 2027-04-27 (+7d) | -69.35d → -75.35d |
| 12 | **Grounding Works** | 2027-04-20 → 2027-04-27 (+7d) | 2027-04-24 → 2027-05-01 (+7d) |  |
| MOD-SWN-PS-1064 | Grounding pit – PS3 & PS4 for Sewerage Network Zone 3 | 2027-04-20 → 2027-04-27 (+7d) | 2027-04-21 → 2027-04-28 (+7d) | -69.35d → -75.35d |
| MOD-SWN-PS-1074 | 600x600 Cable pull pit – PS3 & PS4 for Sewerage Network Zone 3 | 2027-04-21 → 2027-04-28 (+7d) | 2027-04-24 → 2027-05-01 (+7d) | -69.35d → -75.35d |
| 13 | **Landscaping / Interlocking Tiles** | 2027-04-24 → 2027-05-01 (+7d) | 2027-05-23 → 2027-05-30 (+7d) |  |
| MOD-SWN-PS-1084 | Building perimeter interlock tiles for Sewerage Network Zone 3 | 2027-04-24 → 2027-05-01 (+7d) | 2027-05-18 → 2027-05-25 (+7d) | -69.35d → -75.35d |
| MOD-SWN-PS-1094 | Entrance road paving tiles for Sewerage Network Zone 3 | 2027-05-18 → 2027-05-25 (+7d) | 2027-05-23 → 2027-05-30 (+7d) | -66.05d → -72.05d |
| 14 | **Pumping Station Internal Drainage Network** | 2027-04-24 → 2027-05-01 (+7d) | 2027-05-02 → 2027-05-09 (+7d) |  |
| MOD-SWN-PS-1104 | Internal surface drainage channels for Sewerage Network Zone 3 | 2027-04-24 → 2027-05-01 (+7d) | 2027-05-02 → 2027-05-09 (+7d) | -52.05d → -58.05d |
| 14 | **Rainwater Drainage Network Zone 3** |  | 2026-12-31 → 2027-01-07 (+7d) |  |
| 1 | **Pipe Laying Works** |  | 2026-12-06 → 2026-12-13 (+7d) |  |
| 2 | **Supply & Installation of uPVC Pipes (250–300mm dia)** |  | 2026-11-13 → 2026-11-20 (+7d) |  |
| MOD-RWN-PL-233 | Excavation to required depth UPVC for Rainwater Drainage Network Zone 3 |  | 2026-11-08 → 2026-11-15 (+7d) | -132.11d → -139.11d |
| MOD-RWN-PL-243 | Lean Concrete / Bedding UPVC for Rainwater Drainage Network Zone 3 |  | 2026-11-08 → 2026-11-15 (+7d) | -132.11d → -139.11d |
| MOD-RWN-PL-253 | Laying of uPVC pipe UPVC for Rainwater Drainage Network Zone 3 |  | 2026-11-09 → 2026-11-16 (+7d) | -132.11d → -139.11d |
| MOD-RWN-PL-283 | Test (Pressure-slope) UPVC for Rainwater Drainage Network Zone 3 |  | 2026-11-09 → 2026-11-16 (+7d) | -132.11d → -139.11d |
| MOD-RWN-PL-263 | Coating / Wrapping UPVC for Rainwater Drainage Network Zone 3 |  | 2026-11-10 → 2026-11-17 (+7d) | -106.31d → -113.31d |
| MOD-RWN-PL-293 | Backfilling & Warning Tape UPVC for Rainwater Drainage Network Zone 3 |  | 2026-11-13 → 2026-11-20 (+7d) | -109.91d → -116.91d |
| 3 | **Supply & Installation of GRP Pipes (350–800mm dia)** |  | 2026-11-12 → 2026-11-19 (+7d) |  |
| MOD-RWN-PL-343 | Test (Pressure-slope) GRP for Rainwater Drainage Network Zone 3 |  | 2026-11-12 → 2026-11-19 (+7d) | -108.56d → -115.56d |
| 4 | **uPVC Connection Pipes (150mm dia)** |  | 2026-12-06 → 2026-12-13 (+7d) |  |
| MOD-RWN-PL-373 | Excavate short trench paths UPVC Con. for Rainwater Drainage Network Zone 3 |  | 2026-11-07 → 2026-11-14 (+7d) | -130.29d → -137.29d |
| MOD-RWN-PL-383 | Lean Concrete / bedding material UPVC Con. for Rainwater Drainage Network Zone 3 |  | 2026-11-07 → 2026-11-14 (+7d) | -130.29d → -137.29d |
| MOD-RWN-PL-393 | Lay & connect UPVC Con. for Rainwater Drainage Network Zone 3 |  | 2026-11-10 → 2026-11-17 (+7d) | -132.11d → -139.11d |
| MOD-RWN-PL-403 | Test (Pressure-slope) UPVC Con. for Rainwater Drainage Network Zone 3 | 2026-11-10 → 2026-11-17 (+7d) | 2026-11-13 → 2026-11-20 (+7d) | -132.11d → -139.11d |
| MOD-RWN-PL-723 | Coating / Wrapping UPVC Con. for Rainwater Drainage Network Zone 3 | 2026-11-13 → 2026-11-20 (+7d) | 2026-12-04 → 2026-12-11 (+7d) | -132.11d → -139.11d |
| MOD-RWN-PL-413 | Backfilling & compaction UPVC Con. for Rainwater Drainage Network Zone 3 | 2026-12-04 → 2026-12-11 (+7d) | 2026-12-06 → 2026-12-13 (+7d) | -132.11d → -139.11d |
| 5 | **Precast Concrete Box Culverts** |  | 2026-12-31 → 2027-01-07 (+7d) |  |
| 1 | **Box Culverts (500x500mm to 3500x800mm)** |  | 2026-12-31 → 2027-01-07 (+7d) |  |
| MOD-RWN-PC-254 | Dewatering and trench shoring Box culvert for Rainwater Drainage Network Zone 3 |  | 2026-11-15 → 2026-11-22 (+7d) | -134.56d → -140.56d |
| MOD-RWN-PC-264 | Bedding preparation (gravel/lean concrete) Box culvert for Rainwater Drainage Network Zone 3 | 2026-11-15 → 2026-11-22 (+7d) | 2026-11-19 → 2026-11-26 (+7d) | -134.56d → -140.56d |
| MOD-RWN-PC-274 | Installation of box culvert units Box culvert for Rainwater Drainage Network Zone 3 | 2026-11-19 → 2026-11-26 (+7d) | 2026-12-01 → 2026-12-08 (+7d) | -134.56d → -140.56d |
| MOD-RWN-PC-284 | Alignment and joint sealing Box culvert for Rainwater Drainage Network Zone 3 | 2026-12-01 → 2026-12-08 (+7d) | 2026-12-06 → 2026-12-13 (+7d) | -134.56d → -140.56d |
| MOD-RWN-PC-294 | Construct headwalls/wing walls (if needed) Box culvert for Rainwater Drainage Network Zone 3 | 2026-12-06 → 2026-12-13 (+7d) | 2026-12-20 → 2026-12-27 (+7d) | -134.56d → -140.56d |
| MOD-RWN-PC-304 | Backfilling and compaction Box culvert for Rainwater Drainage Network Zone 3 | 2026-12-20 → 2026-12-27 (+7d) | 2026-12-28 → 2027-01-04 (+7d) | -134.56d → -140.56d |
| MOD-RWN-PC-314 | Surface finishing Box culvert for Rainwater Drainage Network Zone 3 | 2026-12-28 → 2027-01-04 (+7d) | 2026-12-31 → 2027-01-07 (+7d) | -134.56d → -140.56d |
| 4 | **Manholes** | 2026-11-19 → 2026-11-26 (+7d) | 2026-12-31 → 2027-01-07 (+7d) |  |
| 1 | **Circular GRP Manholes (1200–1800mm dia)** | 2026-11-19 → 2026-11-26 (+7d) | 2026-12-27 → 2027-01-03 (+7d) |  |
| MOD-RWN-MH-234 | Excavate to full manhole depth Circular Manhole for Rainwater Drainage Network Zone 3 | 2026-11-19 → 2026-11-26 (+7d) | 2026-11-28 → 2026-12-05 (+7d) | -130.56d → -136.56d |
| MOD-RWN-MH-244 | Dewatering and safety barriers Circular Manhole for Rainwater Drainage Network Zone 3 | 2026-11-28 → 2026-12-05 (+7d) | 2026-12-05 → 2026-12-12 (+7d) | -130.56d → -136.56d |
| MOD-RWN-MH-254 | Concrete base construction Circular Manhole for Rainwater Drainage Network Zone 3 | 2026-12-05 → 2026-12-12 (+7d) | 2026-12-07 → 2026-12-14 (+7d) | -130.56d → -136.56d |
| MOD-RWN-MH-264 | Install GRP manhole shaft sections Circular Manhole for Rainwater Drainage Network Zone 3 | 2026-12-07 → 2026-12-14 (+7d) | 2026-12-15 → 2026-12-22 (+7d) | -130.56d → -136.56d |
| MOD-RWN-MH-274 | Place slab and cover frame Circular Manhole for Rainwater Drainage Network Zone 3 | 2026-12-15 → 2026-12-22 (+7d) | 2026-12-22 → 2026-12-29 (+7d) | -130.56d → -136.56d |
| MOD-RWN-MH-284 | Waterproofing Circular Manhole for Rainwater Drainage Network Zone 3 | 2026-12-22 → 2026-12-29 (+7d) | 2026-12-24 → 2026-12-31 (+7d) | -130.56d → -136.56d |
| MOD-RWN-MH-294 | Backfilling and compaction Circular Manhole for Rainwater Drainage Network Zone 3 | 2026-12-24 → 2026-12-31 (+7d) | 2026-12-27 → 2027-01-03 (+7d) | -130.56d → -136.56d |
| 3 | **Concrete Manholes for 1500x1500 Box Pipes** | 2026-11-19 → 2026-11-26 (+7d) | 2026-12-27 → 2027-01-03 (+7d) |  |
| MOD-RWN-MH-374 | Excavation Concrete Manhole 1.5x1.5 for Rainwater Drainage Network Zone 3 | 2026-11-19 → 2026-11-26 (+7d) | 2026-11-26 → 2026-12-03 (+7d) | -130.56d → -136.56d |
| MOD-RWN-MH-384 | Base slab and wall shuttering Concrete Manhole 1.5x1.5 for Rainwater Drainage Network Zone 3 | 2026-11-26 → 2026-12-03 (+7d) | 2026-12-01 → 2026-12-08 (+7d) | -130.56d → -136.56d |

| ID | Task | Start | Finish | Total float |
| --- | --- | --- | --- | --- |
| MOD-RWN-MH-394 | Wall reinforcement and casting Concrete Manhole 1.5x1.5 for Rainwater Drainage Network Zone 3 | 2026-12-01 → 2026-12-08 (+7d) | 2026-12-10 → 2026-12-17 (+7d) | -130.56d → -136.56d |
| MOD-RWN-MH-404 | Roof slab with openings Concrete Manhole 1.5x1.5 for Rainwater Drainage Network Zone 3 | 2026-12-10 → 2026-12-17 (+7d) | 2026-12-15 → 2026-12-22 (+7d) | -130.56d → -136.56d |
| MOD-RWN-MH-414 | Masonry/benching works inside Concrete Manhole 1.5x1.5 for Rainwater Drainage Network Zone 3 | 2026-12-15 → 2026-12-22 (+7d) | 2026-12-21 → 2026-12-28 (+7d) | -130.56d → -136.56d |
| MOD-RWN-MH-424 | Install cover and frame Concrete Manhole 1.5x1.5 for Rainwater Drainage Network Zone 3 | 2026-12-21 → 2026-12-28 (+7d) | 2026-12-23 → 2026-12-30 (+7d) | -130.56d → -136.56d |
| MOD-RWN-MH-434 | Backfill in layers Concrete Manhole 1.5x1.5 for Rainwater Drainage Network Zone 3 | 2026-12-23 → 2026-12-30 (+7d) | 2026-12-27 → 2027-01-03 (+7d) | -130.56d → -136.56d |
| 2 | **Concrete Manholes for 1000x1000 Box Pipes** | 2026-11-19 → 2026-11-26 (+7d) | 2026-12-31 → 2027-01-07 (+7d) |  |
| MOD-RWN-MH-304 | Excavation Concrete Manhole 1x1 for Rainwater Drainage Network Zone 3 | 2026-11-19 → 2026-11-26 (+7d) | 2026-11-26 → 2026-12-03 (+7d) | -134.56d → -140.56d |
| MOD-RWN-MH-314 | Base slab and wall shuttering Concrete Manhole 1x1 for Rainwater Drainage Network Zone 3 | 2026-11-26 → 2026-12-03 (+7d) | 2026-12-01 → 2026-12-08 (+7d) | -134.56d → -140.56d |
| MOD-RWN-MH-324 | Wall reinforcement and casting Concrete Manhole 1x1 for Rainwater Drainage Network Zone 3 | 2026-12-01 → 2026-12-08 (+7d) | 2026-12-08 → 2026-12-15 (+7d) | -134.56d → -140.56d |
| MOD-RWN-MH-334 | Roof slab with openings Concrete Manhole 1x1 for Rainwater Drainage Network Zone 3 | 2026-12-08 → 2026-12-15 (+7d) | 2026-12-13 → 2026-12-20 (+7d) | -134.56d → -140.56d |
| MOD-RWN-MH-344 | Masonry/benching works inside Concrete Manhole 1x1 for Rainwater Drainage Network Zone 3 | 2026-12-13 → 2026-12-20 (+7d) | 2026-12-21 → 2026-12-28 (+7d) | -134.56d → -140.56d |
| MOD-RWN-MH-354 | Install cover and frame Concrete Manhole 1x1 for Rainwater Drainage Network Zone 3 | 2026-12-21 → 2026-12-28 (+7d) | 2026-12-26 → 2027-01-02 (+7d) | -134.56d → -140.56d |
| MOD-RWN-MH-364 | Backfill in layers Concrete Manhole 1x1 for Rainwater Drainage Network Zone 3 | 2026-12-26 → 2027-01-02 (+7d) | 2026-12-31 → 2027-01-07 (+7d) | -134.56d → -140.56d |
| 2 | **Chambers and Catch Basins** |  | 2026-11-24 → 2026-12-01 (+7d) |  |
| 1 | **Gully Outfalls** |  | 2026-11-21 → 2026-11-28 (+7d) |  |
| MOD-RWN-CC-198 | Provide slope protection (riprap) Gully Outfall for Rainwater Drainage Network Zone 3 |  | 2026-11-19 → 2026-11-26 (+7d) | -99.72d → -105.72d |
| MOD-RWN-CC-208 | Compact and shape terrain Gully Outfall for Rainwater Drainage Network Zone 3 |  | 2026-11-21 → 2026-11-28 (+7d) | -99.72d → -105.72d |
| 2 | **Rainwater Catch Basins** |  | 2026-11-19 → 2026-11-26 (+7d) |  |
| MOD-RWN-CC-258 | Backfill and surface finish Catch Basin for Rainwater Drainage Network Zone 3 |  | 2026-11-19 → 2026-11-26 (+7d) | -98.66d → -104.66d |
| 3 | **Precast Chambers for Absorption Pits** |  | 2026-11-24 → 2026-12-01 (+7d) |  |
| MOD-RWN-CC-308 | Backfill and compact Absorption Pit for Rainwater Drainage Network Zone 3 |  | 2026-11-24 → 2026-12-01 (+7d) | -102.41d → -108.41d |
| 3 | **Gully Outfalls to Swales** |  | 2026-12-10 → 2026-12-17 (+7d) |  |
| 1 | **Gully Outfalls to Swales** |  | 2026-11-24 → 2026-12-01 (+7d) |  |
| MOD-RWN-GO-111 | Excavate outfall channel Gully Outfall to Swales for Rainwater Drainage Network Zone 3 |  | 2026-11-19 → 2026-11-26 (+7d) | -102.56d → -108.56d |
| MOD-RWN-GO-121 | Place concrete apron or pipes Gully Outfall to Swales for Rainwater Drainage Network Zone 3 |  | 2026-11-21 → 2026-11-28 (+7d) | -102.56d → -108.56d |
| MOD-RWN-GO-131 | Provide slope protection (riprap) Gully Outfall to Swales for Rainwater Drainage Network Zone 3 |  | 2026-11-22 → 2026-11-29 (+7d) | -102.56d → -108.56d |
| MOD-RWN-GO-141 | Compact and shape terrain Gully Outfall to Swales for Rainwater Drainage Network Zone 3 | 2026-11-22 → 2026-11-29 (+7d) | 2026-11-24 → 2026-12-01 (+7d) | -102.56d → -108.56d |
| 2 | **Riprap Works & Protection** | 2026-11-19 → 2026-11-26 (+7d) | 2026-12-10 → 2026-12-17 (+7d) |  |
| MOD-RWN-GO-151 | Lay filter fabric/membrane for Rainwater Drainage Network Zone 3 | 2026-11-19 → 2026-11-26 (+7d) | 2026-11-23 → 2026-11-30 (+7d) | -116.56d → -122.56d |
| MOD-RWN-GO-161 | Place riprap/stone layer for Rainwater Drainage Network Zone 3 | 2026-11-23 → 2026-11-30 (+7d) | 2026-12-05 → 2026-12-12 (+7d) | -116.56d → -122.56d |
| MOD-RWN-GO-171 | Compact edges for Rainwater Drainage Network Zone 3 | 2026-12-05 → 2026-12-12 (+7d) | 2026-12-08 → 2026-12-15 (+7d) | -116.56d → -122.56d |
| MOD-RWN-GO-181 | Ensure hydraulic flow direction for Rainwater Drainage Network Zone 3 | 2026-12-08 → 2026-12-15 (+7d) | 2026-12-10 → 2026-12-17 (+7d) | -116.56d → -122.56d |
| 6 | **Backfilling & Bedding** |  | 2026-11-30 → 2026-12-07 (+7d) |  |
| 1 | **Backfilling Materials (Type A – 201–700mm Pipes)** |  | 2026-11-08 → 2026-11-15 (+7d) |  |
| MOD-RWN-BB-112 | Place granular bedding under pipe for Rainwater Drainage Network Zone 3 |  | 2026-11-07 → 2026-11-14 (+7d) | -88.65d → -94.65d |
| MOD-RWN-BB-122 | Lay and align pipe for Rainwater Drainage Network Zone 3 |  | 2026-11-07 → 2026-11-14 (+7d) | -88.65d → -94.65d |
| MOD-RWN-BB-132 | Backfill up to spring line for Rainwater Drainage Network Zone 3 |  | 2026-11-08 → 2026-11-15 (+7d) | -88.65d → -94.65d |
| MOD-RWN-BB-142 | Compact layer-wise for Rainwater Drainage Network Zone 3 |  | 2026-11-08 → 2026-11-15 (+7d) | -88.65d → -94.65d |
| MOD-RWN-BB-152 | Final fill to subgrade level for Rainwater Drainage Network Zone 3 |  | 2026-11-08 → 2026-11-15 (+7d) | -88.65d → -94.65d |
| 2 | **Gravel Bedding & Filter Cloth for uPVC Drain Pipes** |  | 2026-11-30 → 2026-12-07 (+7d) |  |
| MOD-RWN-BB-162 | Line trench with filter cloth for Rainwater Drainage Network Zone 3 |  | 2026-11-07 → 2026-11-14 (+7d) | -107.56d → -113.56d |
| MOD-RWN-BB-172 | Place and compact gravel bedding for Rainwater Drainage Network Zone 3 |  | 2026-11-08 → 2026-11-15 (+7d) | -107.56d → -113.56d |
| MOD-RWN-BB-182 | Lay pipe within gravel zone for Rainwater Drainage Network Zone 3 |  | 2026-11-10 → 2026-11-17 (+7d) | -107.56d → -113.56d |
| MOD-RWN-BB-192 | Wrap filter cloth above pipe for Rainwater Drainage Network Zone 3 |  | 2026-11-16 → 2026-11-23 (+7d) | -107.56d → -113.56d |
| MOD-RWN-BB-202 | Final fill and trench restoration for Rainwater Drainage Network Zone 3 | 2026-11-16 → 2026-11-23 (+7d) | 2026-11-30 → 2026-12-07 (+7d) | -107.56d → -113.56d |
| 7 | **Deep Basin for Groundwater Collection (2.5–3.0m)** |  | 2026-11-30 → 2026-12-06 (+6d) |  |
| MOD-RWN-DB-002 | Base and side wall construction (cast-in-situ or precast) for Rainwater Drainage Network Zone 3 |  | 2026-11-08 → 2026-11-15 (+7d) | -107.71d → -112.21d |
| MOD-RWN-DB-003 | Pipe connections for inflow for Rainwater Drainage Network Zone 3 |  | 2026-11-10 → 2026-11-17 (+7d) | -107.71d → -112.21d |
| MOD-RWN-DB-004 | Cover slab and access shaft for Rainwater Drainage Network Zone 3 |  | 2026-11-14 → 2026-11-21 (+7d) | -107.71d → -112.21d |
| MOD-RWN-DB-005 | Waterproofing & sealant for Rainwater Drainage Network Zone 3 |  | 2026-11-22 → 2026-11-28 (+6d) | -107.71d → -112.21d |
| MOD-RWN-DB-006 | Backfill in controlled layers for Rainwater Drainage Network Zone 3 | 2026-11-22 → 2026-11-28 (+6d) | 2026-11-30 → 2026-12-06 (+6d) | -107.71d → -112.21d |
| 13 | **Potable Water Network Zone 3** |  | 2027-01-26 → 2027-02-02 (+7d) |  |
| 13 | **Pipe Installation Works** |  | 2026-11-17 → 2026-11-24 (+7d) |  |
| MOD-PWN-PI-323 | Lean Concrete / Pipe Bedding Preparation for Potable Water Network Zone 3 |  | 2026-11-08 → 2026-11-15 (+7d) | 44.15d → 37.15d |
| MOD-PWN-PI-333 | HDPE Pipe Laying (200 mm to 710 mm) for Potable Water Network Zone 3 |  | 2026-11-12 → 2026-11-19 (+7d) | 44.15d → 37.15d |
| MOD-PWN-PI-343 | Test (Pressure-slope) for Potable Water Network Zone 3 |  | 2026-11-13 → 2026-11-20 (+7d) | 44.15d → 37.15d |
| MOD-PWN-PI-353 | Coating / Wrapping for Potable Water Network Zone 3 |  | 2026-11-15 → 2026-11-22 (+7d) | 44.15d → 37.15d |
| MOD-PWN-PI-363 | Backfilling & Warrning Tape for Potable Water Network Zone 3 |  | 2026-11-17 → 2026-11-24 (+7d) | 44.15d → 37.15d |
| 2 | **Valve Installation & Chambers** |  | 2026-11-28 → 2026-12-05 (+7d) |  |
| MOD-PWN-VC-87 | Butterfly Valves (355, 500, 630 mm) for Potable Water Network Zone 3 |  | 2026-11-07 → 2026-11-14 (+7d) | 29.33d → 23.33d |
| MOD-PWN-VC-97 | 3-exit (2 x 2.5-inch and 1 x 4-inch) dry vacuum cylinder detachable fire nozzle for Potable Water Network Zone 3 |  | 2026-11-07 → 2026-11-14 (+7d) | 29.33d → 23.33d |
| MOD-PWN-VC-107 | Valve Chamber Excavation for Potable Water Network Zone 3 |  | 2026-11-07 → 2026-11-14 (+7d) | 29.26d → 23.26d |
| MOD-PWN-VC-117 | RC Slab, Walls, or Precast Chambers for Potable Water Network Zone 3 |  | 2026-11-07 → 2026-11-14 (+7d) | 29.26d → 23.26d |
| MOD-PWN-VC-77 | Gate Valves (225–710 mm) for Potable Water Network Zone 3 |  | 2026-11-07 → 2026-11-14 (+7d) | 29.33d → 23.33d |
| MOD-PWN-VC-127 | Fixing Covers, Gratings, Frames for Potable Water Network Zone 3 |  | 2026-11-21 → 2026-11-28 (+7d) | 29.26d → 23.26d |
| MOD-PWN-VC-137 | Tagging & Painting for Potable Water Network Zone 3 | 2026-11-21 → 2026-11-28 (+7d) | 2026-11-28 → 2026-12-05 (+7d) | 29.26d → 23.26d |
| 3 | **Flow Meter Installation** |  | 2026-12-19 → 2026-12-26 (+7d) |  |
| MOD-PWN-FM-55 | Chamber Excavation (280 mm, 300 mm, 500 mm, 800 mm) for Potable Water Network Zone 3 |  | 2026-11-07 → 2026-11-14 (+7d) | 30.5d → 24.5d |
| MOD-PWN-FM-65 | RC or Precast Chamber Construction for Potable Water Network Zone 3 |  | 2026-11-11 → 2026-11-18 (+7d) | 30.5d → 24.5d |
| MOD-PWN-FM-75 | Flowmeter Installation & Pipe Integration for Potable Water Network Zone 3 |  | 2026-12-09 → 2026-12-16 (+7d) | 11.35d → 5.35d |

| ID | Task | Start | Finish | Complete | Total float |
| --- | --- | --- | --- | --- | --- |
| MOD-PWN-FM-85 | Wiring/Cabling if applicable for Potable Water Network Zone 3 |  | 2026-12-15 → 2026-12-22 (+7d) |  | 11.35d → 5.35d |
| MOD-PWN-FM-95 | Calibration & Commissioning for Potable Water Network Zone 3 | 2026-12-15 → 2026-12-22 (+7d) | 2026-12-19 → 2026-12-26 (+7d) |  | 11.35d → 5.35d |
| 4 | **Washout & Air Valve Chambers** |  | 2026-11-12 → 2026-11-19 (+7d) |  |  |
| MOD-PWN-WA-87 | RC Blinding + Base + Walls for Potable Water Network Zone 3 |  | 2026-11-07 → 2026-11-14 (+7d) |  | 42.25d → 36.25d |
| MOD-PWN-WA-97 | Pipe Work for Potable Water Network Zone 3 |  | 2026-11-08 → 2026-11-15 (+7d) |  | 42.25d → 36.25d |
| MOD-PWN-WA-107 | Washout (Valve + Outlet) Installation for Potable Water Network Zone 3 |  | 2026-11-09 → 2026-11-16 (+7d) |  | 42.25d → 36.25d |
| MOD-PWN-WA-117 | Air Valve Rooms (Valve + Outlet) Installation for Potable Water Network Zone 3 |  | 2026-11-09 → 2026-11-16 (+7d) |  | 42.25d → 36.25d |
| MOD-PWN-WA-127 | Covers, Ladders & Tags for Potable Water Network Zone 3 |  | 2026-11-10 → 2026-11-17 (+7d) |  | 42.25d → 36.25d |
| MOD-PWN-WA-137 | Backfilling & Final Finishing for Potable Water Network Zone 3 | 2026-11-10 → 2026-11-17 (+7d) | 2026-11-12 → 2026-11-19 (+7d) |  | 42.25d → 36.25d |
| 5 | **Pumping Station (Structure & Civil Works)** | 2026-11-07 → 2026-11-14 (+7d) | 2027-01-21 → 2027-01-28 (+7d) |  |  |
| MOD-PWN-PS-66 | Excavation & Blinding for Potable Water Network Zone 3 | 2026-11-07 → 2026-11-14 (+7d) | 2026-11-17 → 2026-11-24 (+7d) |  | -21.8d → -27.8d |
| MOD-PWN-PS-76 | Reinforced Concrete/GRP Shell Construction for Potable Water Network Zone 3 | 2026-11-18 → 2026-11-25 (+7d) | 2026-11-26 → 2026-12-03 (+7d) |  | -21.8d → -27.8d |
| MOD-PWN-PS-86 | Access Ladders, Tight Cover, Surface Guttering for Potable Water Network Zone 3 | 2026-11-28 → 2026-12-05 (+7d) | 2026-12-02 → 2026-12-09 (+7d) |  | -21.8d → -27.8d |
| MOD-PWN-PS-96 | Internal piping & embedded sleeves for Potable Water Network Zone 3 | 2026-12-03 → 2026-12-10 (+7d) | 2026-12-17 → 2026-12-24 (+7d) |  | -21.8d → -27.8d |
| MOD-PWN-PS-106 | Pump Base Pads + Grouting for Potable Water Network Zone 3 | 2026-12-19 → 2026-12-26 (+7d) | 2027-01-02 → 2027-01-09 (+7d) |  | -18.6d → -24.6d |
| MOD-PWN-PS-116 | Backfilling & External Finishes for Potable Water Network Zone 3 | 2027-01-03 → 2027-01-10 (+7d) | 2027-01-21 → 2027-01-28 (+7d) |  | -18.6d → -24.6d |
| 6 | **Pump Station Building** | 2026-12-19 → 2026-12-26 (+7d) | 2027-01-23 → 2027-01-30 (+7d) |  |  |
| MOD-PWN-PB-33 | Structure Construction (as per architectural drawings) for Potable Water Network Zone 3 | 2026-12-19 → 2026-12-26 (+7d) | 2027-01-02 → 2027-01-09 (+7d) |  | -21.8d → -27.8d |
| MOD-PWN-PB-43 | 5-ton Hoist Installation for Potable Water Network Zone 3 | 2027-01-03 → 2027-01-10 (+7d) | 2027-01-07 → 2027-01-14 (+7d) |  | -21.8d → -27.8d |
| MOD-PWN-PB-53 | Finishes, Doors, Ventilation for Potable Water Network Zone 3 | 2027-01-09 → 2027-01-16 (+7d) | 2027-01-23 → 2027-01-30 (+7d) |  | -21.8d → -27.8d |
| 7 | **Pumping Equipment & Fire Systems** |  | 2027-01-14 → 2027-01-21 (+7d) |  |  |
| MOD-PWN-PE-88 | Main Pumps (250 kW, 295 L/s @ 60 m head) for Potable Water Network Zone 3 |  | 2026-12-30 → 2027-01-06 (+7d) |  | -13.1d → -19.1d |
| MOD-PWN-PE-98 | Electric Fire Water Pump (64 L/s @ 60 m) for Potable Water Network Zone 3 |  | 2027-01-06 → 2027-01-13 (+7d) |  | -12.1d → -18.1d |
| MOD-PWN-PE-108 | Diesel Fire Water Pump (64 L/s @ 60 m) for Potable Water Network Zone 3 |  | 2027-01-04 → 2027-01-11 (+7d) |  | -12.1d → -18.1d |
| MOD-PWN-PE-118 | Electric Jockey Pump for Potable Water Network Zone 3 |  | 2027-01-04 → 2027-01-11 (+7d) |  | -12.1d → -18.1d |
| MOD-PWN-PE-128 | Submersible Fire Pumps (2 pcs, 10 L/s @ 10 m) for Potable Water Network Zone 3 |  | 2027-01-03 → 2027-01-10 (+7d) |  | -12.1d → -18.1d |
| MOD-PWN-PE-138 | Pipework connections within Pump Room for Potable Water Network Zone 3 | 2027-01-03 → 2027-01-10 (+7d) | 2027-01-09 → 2027-01-16 (+7d) |  | -12.1d → -18.1d |
| MOD-PWN-PE-148 | MCC & DB panel installation for Potable Water Network Zone 3 | 2027-01-09 → 2027-01-16 (+7d) | 2027-01-11 → 2027-01-18 (+7d) |  | -12.1d → -18.1d |
| MOD-PWN-PE-158 | Flow meter on 800mm pipe including flow meter chamber and 2-2.5m depth for Potable Water Network Zone 3 | 2027-01-11 → 2027-01-18 (+7d) | 2027-01-14 → 2027-01-21 (+7d) |  | -12.1d → -18.1d |
| 8 | **Surge Protection** | 2027-01-09 → 2027-01-16 (+7d) | 2027-01-14 → 2027-01-21 (+7d) |  |  |
| MOD-PWN-SP-22 | Surge Vessel Installation for Potable Water Network Zone 3 | 2027-01-09 → 2027-01-16 (+7d) | 2027-01-13 → 2027-01-20 (+7d) |  | -12.1d → -18.1d |
| MOD-PWN-SP-32 | Pipe Integration as per Surge Analysis for Potable Water Network Zone 3 | 2027-01-13 → 2027-01-20 (+7d) | 2027-01-14 → 2027-01-21 (+7d) |  | -12.1d → -18.1d |
| 9 | **Power & Generator System** | 2026-12-30 → 2027-01-06 (+7d) | 2027-01-13 → 2027-01-20 (+7d) |  |  |
| MOD-PWN-PG-44 | 500 kVA Standby Generator Installation for Potable Water Network Zone 3 | 2026-12-30 → 2027-01-06 (+7d) | 2027-01-04 → 2027-01-11 (+7d) |  | -11.1d → -17.1d |
| MOD-PWN-PG-54 | Canopy, Foundation & Fuel Tank for Potable Water Network Zone 3 | 2026-12-30 → 2027-01-06 (+7d) | 2027-01-06 → 2027-01-13 (+7d) |  | -11.1d → -17.1d |
| MOD-PWN-PG-64 | Electrical Cabling, Circuit Breakers for Potable Water Network Zone 3 | 2027-01-06 → 2027-01-13 (+7d) | 2027-01-11 → 2027-01-18 (+7d) |  | -11.1d → -17.1d |
| MOD-PWN-PG-74 | Earthing & Commissioning for Potable Water Network Zone 3 | 2027-01-11 → 2027-01-18 (+7d) | 2027-01-13 → 2027-01-20 (+7d) |  | -11.1d → -17.1d |
| 10 | **Chlorination System** | 2027-01-03 → 2027-01-10 (+7d) | 2027-01-18 → 2027-01-25 (+7d) |  |  |
| MOD-PWN-CS-33 | Chlorination Device Supply & Installation for Potable Water Network Zone 3 | 2027-01-03 → 2027-01-10 (+7d) | 2027-01-10 → 2027-01-17 (+7d) |  | -15.6d → -21.6d |
| MOD-PWN-CS-43 | Connections to Main Line or Disinfection Chamber for Potable Water Network Zone 3 | 2027-01-11 → 2027-01-18 (+7d) | 2027-01-14 → 2027-01-21 (+7d) |  | -15.6d → -21.6d |
| MOD-PWN-CS-53 | Control Integration for Potable Water Network Zone 3 | 2027-01-16 → 2027-01-23 (+7d) | 2027-01-18 → 2027-01-25 (+7d) |  | -15.6d → -21.6d |
| 11 | **Water Storage System** |  | 2027-01-26 → 2027-02-02 (+7d) |  |  |
| MOD-PWN-WS-11 | Structural tanks for supply or pressure equalization for Potable Water Network Zone 3 |  | 2027-01-26 → 2027-02-02 (+7d) |  | -21.8d → -27.8d |
| 12 | **Street Lighting** |  | 2027-01-10 → 2027-01-17 (+7d) |  |  |
| MOD-PWN-SL-75 | Pole & Fixture Installation for Potable Water Network Zone 3 |  | 2027-01-03 → 2027-01-10 (+7d) |  | -7.76d → -13.76d |
| MOD-PWN-SL-65 | Conduits, Cabling, Backfilling for Potable Water Network Zone 3 |  | 2027-01-03 → 2027-01-10 (+7d) |  | -7.76d → -13.76d |
| MOD-PWN-SL-85 | Connection to Main Supply for Potable Water Network Zone 3 | 2027-01-03 → 2027-01-10 (+7d) | 2027-01-10 → 2027-01-17 (+7d) |  | -7.76d → -13.76d |
| MOD-PWN-SL-95 | Testing & Lighting Commissioning for Potable Water Network Zone 3 | 2027-01-03 → 2027-01-10 (+7d) | 2027-01-10 → 2027-01-17 (+7d) |  | -7.76d → -13.76d |
| 6 | **Irrigation Network Zone 3** |  | 2026-12-13 → 2026-12-20 (+7d) |  |  |
| 1 | **Excavation, Pipe Laying & Backfilling** |  | 2026-11-13 → 2026-11-20 (+7d) |  |  |
| MOD-IRN-EB-120 | Trench Excavation for Irrigation Network Zone 3 |  | 2026-11-09 → 2026-11-16 (+7d) | 90% → 95% | 47.48d → 40.48d |
| MOD-IRN-EB-130 | Lean Concrete / Pipe Bedding with Type B Material for Irrigation Network Zone 3 |  | 2026-11-09 → 2026-11-16 (+7d) | 90% → 95% | 47.48d → 40.48d |
| MOD-IRN-EB-140 | HDPE Pipe Laying (125 mm to 630 mm) for Irrigation Network Zone 3 |  | 2026-11-12 → 2026-11-19 (+7d) | 90% → 95% | 47.48d → 40.48d |
| MOD-IRN-EB-150 | Test (Pressure-slope) for Irrigation Network Zone 3 |  | 2026-11-12 → 2026-11-19 (+7d) | 82% → 90% | 47.48d → 40.48d |
| MOD-IRN-EB-180 | Coating / Wrapping for Irrigation Network Zone 3 |  | 2026-11-12 → 2026-11-19 (+7d) | 82% → 90% | 47.48d → 40.48d |
| MOD-IRN-EB-190 | Backfilling & Warrning Tape for Irrigation Network Zone 3 |  | 2026-11-13 → 2026-11-20 (+7d) |  | 47.48d → 40.48d |
| 2 | **Valves and Appurtenances** |  | 2026-11-09 → 2026-11-16 (+7d) |  |  |
| MOD-IRN-VA-65 | Supply & Installation of Valves (Butterfly Valve) for Irrigation Network Zone 3 |  | 2026-11-08 → 2026-11-15 (+7d) |  | 44.85d → 38.85d |
| MOD-IRN-VA-75 | Installation of Flanges, Bolts, Collars, Nuts for Irrigation Network Zone 3 |  | 2026-11-08 → 2026-11-15 (+7d) |  | 44.85d → 38.85d |
| MOD-IRN-VA-85 | Valve Pressure Testing for Irrigation Network Zone 3 |  | 2026-11-08 → 2026-11-15 (+7d) |  | 44.85d → 38.85d |
| MOD-IRN-VA-95 | Support Brackets/Anchor Blocks for Irrigation Network Zone 3 |  | 2026-11-09 → 2026-11-16 (+7d) |  | 44.85d → 38.85d |
| 3 | **Valve Rooms** |  | 2026-11-07 → 2026-11-14 (+7d) |  |  |
| MOD-IRN-VR-137 | Backfilling and Finishing Valve Chamber for Irrigation Network Zone 3 |  | 2026-11-07 → 2026-11-14 (+7d) |  | 47.1d → 41.1d |
| 4 | **Washout Chambers** |  | 2026-11-08 → 2026-11-15 (+7d) |  |  |
| MOD-IRN-WC-96 | Washout Valve & Pipe Connection Washout Chamber for Irrigation Network Zone 3 |  | 2026-11-07 → 2026-11-14 (+7d) |  | 46.1d → 40.1d |
| MOD-IRN-WC-106 | Manhole Frame, Cover & Ladder Fixing Washout Chamber for Irrigation Network Zone 3 |  | 2026-11-07 → 2026-11-14 (+7d) |  | 46.1d → 40.1d |
| MOD-IRN-WC-116 | Backfilling & Reinstatement Washout Chamber for Irrigation Network Zone 3 |  | 2026-11-08 → 2026-11-15 (+7d) |  | 46.1d → 40.1d |
| 5 | **Air Valve Chambers** |  | 2026-11-07 → 2026-11-14 (+7d) |  |  |
| MOD-IRN-AC-95 | Cover Fixing & Finishing Air Valve Chamber for Irrigation Network Zone 3 |  | 2026-11-07 → 2026-11-14 (+7d) |  | 47.3d → 41.3d |
| 6 | **Flow Meter Chambers** |  | 2026-12-13 → 2026-12-20 (+7d) |  |  |

| ID | Task | Start | Finish | Complete | Total float |
| --- | --- | --- | --- | --- | --- |
| MOD-IRN-FC-76 | RCC Base & Wall Construction Flow Meter Chamber for Irrigation Network Zone 3 |  | 2026-11-07 → 2026-11-14 (+7d) |  | 38d → 32d |
| MOD-IRN-FC-86 | Flow Meter Installation (280, 300, 500 mm) Flow Meter Chamber for Irrigation Network Zone 3 |  | 2026-12-05 → 2026-12-12 (+7d) |  | 15.55d → 9.55d |
| MOD-IRN-FC-96 | Integration with Pipework Flow Meter Chamber for Irrigation Network Zone 3 |  | 2026-12-06 → 2026-12-13 (+7d) |  | 15.55d → 9.55d |
| MOD-IRN-FC-106 | Testing & Calibration Flow Meter Chamber for Irrigation Network Zone 3 |  | 2026-12-08 → 2026-12-15 (+7d) |  | 15.55d → 9.55d |
| MOD-IRN-FC-116 | Cover and Access Arrangement Flow Meter Chamber for Irrigation Network Zone 3 | 2026-12-08 → 2026-12-15 (+7d) | 2026-12-13 → 2026-12-20 (+7d) |  | 15.55d → 9.55d |
| 7 | **Rainwater Collection Ponds Zone 3** |  | 2027-03-20 → 2027-03-27 (+7d) |  |  |
| 10 | **Excavation for Rainwater Drainage Pond** |  | 2027-01-09 → 2027-01-16 (+7d) |  |  |
| 11 | **Deep excavation, backfill, disposal for pond formation** |  | 2027-01-09 → 2027-01-16 (+7d) |  |  |
| MOD-RCP-ER-88 | Excavate in layers to final depth for Rainwater Collection Ponds Zone 3 |  | 2027-01-02 → 2027-01-09 (+7d) | 90% → 92% | 91.8d → 85.8d |
| MOD-RCP-ER-98 | Dewater during excavation for Rainwater Collection Ponds Zone 3 |  | 2027-01-03 → 2027-01-10 (+7d) | 80% → 88% | 91.8d → 85.8d |
| MOD-RCP-ER-108 | Place warning tapes for Rainwater Collection Ponds Zone 3 |  | 2027-01-04 → 2027-01-11 (+7d) | 80% → 88% | 91.8d → 85.8d |
| MOD-RCP-ER-118 | Dispose of rock/materials to approved dump area for Rainwater Collection Ponds Zone 3 |  | 2027-01-06 → 2027-01-13 (+7d) | 80% → 88% | 91.8d → 85.8d |
| MOD-RCP-ER-128 | Backfill selected areas as per design for Rainwater Collection Ponds Zone 3 |  | 2027-01-06 → 2027-01-13 (+7d) | 80% → 88% | 91.8d → 85.8d |
| MOD-RCP-ER-138 | Final trimming and profiling for Rainwater Collection Ponds Zone 3 | 2027-01-06 → 2027-01-13 (+7d) | 2027-01-09 → 2027-01-16 (+7d) |  | 91.8d → 85.8d |
| 1 | **General Site Preparation** |  | 2027-01-05 → 2027-01-12 (+7d) |  |  |
| MOD-RCP-GS-183 | Earthwork excavation (other than topsoil or rock) - Zone 3 (3 Ponds) for Rainwater Collection Ponds Zone 3 |  | 2027-01-03 → 2027-01-10 (+7d) |  | 32.35d → 26.35d |
| MOD-RCP-GS-193 | Transport and disposal to approved locations - Zone 3 (3 Ponds) for Rainwater Collection Ponds Zone 3 |  | 2027-01-05 → 2027-01-12 (+7d) |  | 47.6d → 41.6d |
| 2 | **Backfilling Works** |  | 2027-01-18 → 2027-01-25 (+7d) |  |  |
| MOD-RCP-BW-75 | Compact each layer to required density for Rainwater Collection Ponds Zone 3 |  | 2027-01-12 → 2027-01-19 (+7d) | 90% → 93% | 83.8d → 77.8d |
| MOD-RCP-BW-65 | Place in layers not exceeding 300mm for Rainwater Collection Ponds Zone 3 |  | 2027-01-10 → 2027-01-17 (+7d) | 90% → 93% | 83.8d → 77.8d |
| MOD-RCP-BW-55 | Select material from excavation or import approved material for Rainwater Collection Ponds Zone 3 |  | 2027-01-07 → 2027-01-14 (+7d) | 90% → 95% | 47.6d → 41.6d |
| MOD-RCP-BW-85 | Conduct field density tests for Rainwater Collection Ponds Zone 3 |  | 2027-01-12 → 2027-01-19 (+7d) | 90% → 93% | 83.8d → 77.8d |
| MOD-RCP-BW-95 | Final leveling and approval for Rainwater Collection Ponds Zone 3 | 2027-01-12 → 2027-01-19 (+7d) | 2027-01-18 → 2027-01-25 (+7d) |  | 83.8d → 77.8d |
| 12 | **Geotextile & Bedding** |  | 2027-03-20 → 2027-03-27 (+7d) |  |  |
| 13 | **Installation of geotextile lining and coarse sand bedding** |  | 2027-03-20 → 2027-03-27 (+7d) |  |  |
| MOD-RCP-GB-45 | Trim subgrade to required level for Rainwater Collection Ponds Zone 3 |  | 2027-01-09 → 2027-01-16 (+7d) |  | 47.6d → 41.6d |
| MOD-RCP-GB-55 | Lay HDPE geotextile membrane over compacted soil for Rainwater Collection Ponds Zone 3 |  | 2027-01-16 → 2027-01-23 (+7d) |  | 47.6d → 41.6d |
| MOD-RCP-GB-65 | Place 500mm thick coarse sand bedding for Rainwater Collection Ponds Zone 3 | 2027-01-17 → 2027-01-24 (+7d) | 2027-02-11 → 2027-02-24 (+13d) |  | 47.6d → 41.6d |
| MOD-RCP-GB-75 | Compact and level bedding for Rainwater Collection Ponds Zone 3 | 2027-02-13 → 2027-02-25 (+12d) | 2027-03-20 → 2027-03-27 (+7d) |  | 47.6d → 41.6d |
| 8 | **Road Crossing Zone 3** |  | 2027-06-30 → 2027-07-07 (+7d) |  |  |
| 14 | **uPVC Road Crossing Pipes** |  | 2027-02-24 → 2027-03-08 (+12d) |  |  |
| 15 | **Installation of uPVC pipes of various diameters crossing roadways** |  | 2027-02-24 → 2027-03-08 (+12d) |  |  |
| MOD-ROC-PV-005 | Preparation of trench base with compacted bedding for Road Crossing Zone 3 |  | 2027-01-10 → 2027-01-17 (+7d) |  | -134.66d → -140.66d |
| MOD-ROC-PV-006 | Laying of uPVC pipe (300mm, 315mm, 400mm, 600mm dia) for Road Crossing Zone 3 |  | 2027-01-16 → 2027-01-23 (+7d) |  | -134.66d → -140.66d |
| MOD-ROC-PV-004 | Excavation across road width to required depth for Road Crossing Zone 3 |  | 2027-01-05 → 2027-01-12 (+7d) |  | -134.66d → -140.66d |
| MOD-ROC-PV-007 | Placement of supports and protection around the pipe for Road Crossing Zone 3 | 2027-01-16 → 2027-01-23 (+7d) | 2027-01-21 → 2027-01-28 (+7d) |  | -134.66d → -140.66d |
| MOD-ROC-PV-008 | Testing of installed pipeline for Road Crossing Zone 3 | 2027-01-21 → 2027-01-28 (+7d) | 2027-01-28 → 2027-02-04 (+7d) |  | -134.66d → -140.66d |
| MOD-ROC-PV-009 | Backfilling and compaction in layers for Road Crossing Zone 3 | 2027-01-28 → 2027-02-04 (+7d) | 2027-02-11 → 2027-02-24 (+13d) |  | -134.66d → -140.66d |
| MOD-ROC-PV-010 | Reinstatement of road surface for Road Crossing Zone 3 | 2027-02-11 → 2027-02-24 (+13d) | 2027-02-24 → 2027-03-08 (+12d) |  | -134.66d → -140.66d |
| 16 | **GRP Road Crossing Pipes** | 2027-02-24 → 2027-03-08 (+12d) | 2027-06-30 → 2027-07-07 (+7d) |  |  |
| 17 | **Installation of GRP pipes (800mm–1000mm dia) for road crossings** | 2027-02-24 → 2027-03-08 (+12d) | 2027-06-30 → 2027-07-07 (+7d) |  |  |
| MOD-ROC-GR-002 | Set out location and coordinate with road authority for Road Crossing Zone 3 | 2027-02-24 → 2027-03-08 (+12d) | 2027-03-06 → 2027-03-18 (+12d) |  | -37d → -43d |
| MOD-ROC-GR-003 | Excavate trench across road at designed depth for Road Crossing Zone 3 | 2027-03-06 → 2027-03-20 (+14d) | 2027-03-25 → 2027-04-01 (+7d) |  | -37d → -43d |
| MOD-ROC-GR-004 | Lay compacted granular bedding for Road Crossing Zone 3 | 2027-03-27 → 2027-04-03 (+7d) | 2027-04-13 → 2027-04-20 (+7d) |  | -37d → -43d |
| MOD-ROC-GR-005 | Install GRP pipe (800mm & 1000mm dia) for Road Crossing Zone 3 | 2027-04-14 → 2027-04-21 (+7d) | 2027-05-08 → 2027-05-19 (+11d) |  | -37d → -43d |
| MOD-ROC-GR-006 | Provide structural supports and closure at both ends for Road Crossing Zone 3 | 2027-05-09 → 2027-05-20 (+11d) | 2027-05-23 → 2027-05-30 (+7d) |  | -37d → -43d |
| MOD-ROC-GR-007 | Perform leak testing as per specifications for Road Crossing Zone 3 | 2027-05-24 → 2027-05-31 (+7d) | 2027-05-29 → 2027-06-05 (+7d) |  | -37d → -43d |
| MOD-ROC-GR-008 | Backfill and compact in layers for Road Crossing Zone 3 | 2027-05-30 → 2027-06-06 (+7d) | 2027-06-15 → 2027-06-22 (+7d) |  | -37d → -43d |
| MOD-ROC-GR-009 | Reinstate road surface (asphalt/concrete) for Road Crossing Zone 3 | 2027-06-16 → 2027-06-23 (+7d) | 2027-06-24 → 2027-07-01 (+7d) |  | -37d → -43d |
| MOD-ROC-GR-010 | Final inspection and approval by relevant authority for Road Crossing Zone 3 | 2027-06-26 → 2027-07-03 (+7d) | 2027-06-30 → 2027-07-07 (+7d) |  | -37d → -43d |
| 8 | **Zone 2** |  | 2027-08-02 → 2027-08-09 (+7d) |  |  |
| 5 | **Sewerage Network Zone 2** |  | 2027-01-11 → 2027-01-18 (+7d) |  |  |
| 1 | **Pipework: Supply, Installation, and Testing** |  | 2026-12-30 → 2027-01-06 (+7d) |  |  |
| 3 | **HDPE Pressure Pipes Installation (250mm–630mm)** |  | 2026-12-30 → 2027-01-06 (+7d) |  |  |
| MOD-SWN-PW-585 | Excavation and Trenching HDPE for Sewerage Network Zone 2 |  | 2026-11-11 → 2026-11-18 (+7d) |  | 59.1d → 52.1d |
| MOD-SWN-PW-595 | Lean Concrete / Bedding HDPE for Sewerage Network Zone 2 |  | 2026-11-19 → 2026-11-26 (+7d) |  | 59.1d → 52.1d |
| MOD-SWN-PW-465 | HDPE Pressure Pipes Installation (250mm–630mm) HDPE for Sewerage Network Zone 2 |  | 2026-11-30 → 2026-12-07 (+7d) |  | 59.1d → 52.1d |
| MOD-SWN-PW-605 | Test (Pressure - Slope) HDPE for Sewerage Network Zone 2 |  | 2026-12-07 → 2026-12-14 (+7d) |  | 77.7d → 70.7d |
| MOD-SWN-PW-615 | Coating / Wrapping HDPE for Sewerage Network Zone 2 |  | 2026-12-15 → 2026-12-22 (+7d) |  | 77.7d → 70.7d |
| MOD-SWN-PW-575 | Backfilling & Warrning Tape HDPE for Sewerage Network Zone 2 | 2026-12-16 → 2026-12-23 (+7d) | 2026-12-30 → 2027-01-06 (+7d) |  | 77.7d → 70.7d |
| 2 | **Fittings and Valves** | 2026-11-30 → 2026-12-07 (+7d) | 2026-12-31 → 2027-01-07 (+7d) |  |  |
| MOD-SWN-FV-5 | Supply & Installation of HDPE Elbows for Sewerage Network Zone 2 | 2026-11-30 → 2026-12-07 (+7d) | 2026-12-07 → 2026-12-14 (+7d) |  | 51.1d → 45.1d |
| MOD-SWN-FV-15 | Gate Valves Installation for Sewerage Network Zone 2 | 2026-12-07 → 2026-12-14 (+7d) | 2026-12-12 → 2026-12-19 (+7d) |  | 51.1d → 45.1d |
| MOD-SWN-FV-25 | Drain Valves Installation for Sewerage Network Zone 2 | 2026-12-12 → 2026-12-19 (+7d) | 2026-12-16 → 2026-12-23 (+7d) |  | 51.1d → 45.1d |
| MOD-SWN-FV-35 | Air Breather & Air Release Valves Installation for Sewerage Network Zone 2 | 2026-12-16 → 2026-12-23 (+7d) | 2026-12-28 → 2027-01-04 (+7d) |  | 51.1d → 45.1d |
| MOD-SWN-FV-45 | Jointing & Piping Accessories Installation for Sewerage Network Zone 2 | 2026-12-28 → 2027-01-04 (+7d) | 2026-12-31 → 2027-01-07 (+7d) |  | 51.1d → 45.1d |
| 3 | **Valve & Flow Meter Chambers** |  | 2027-01-11 → 2027-01-18 (+7d) |  |  |
| 1 | **Valve Chambers Construction** |  | 2026-12-21 → 2026-12-28 (+7d) |  |  |
| MOD-SWN-PW-975 | Excavation Valve Chamber for Sewerage Network Zone 2 |  | 2026-11-10 → 2026-11-17 (+7d) |  | 66.27d → 59.66d |
| MOD-SWN-PW-985 | Lean Concrete / Bedding Valve Chamber for Sewerage Network Zone 2 |  | 2026-11-18 → 2026-11-25 (+7d) |  | 66.27d → 59.66d |

| ID | Task | Start | Finish | Complete | Total float |
| --- | --- | --- | --- | --- | --- |
| MOD-SWN-VF-124 | Valve Chambers Construction Valve Chamber for Sewerage Network Zone 2 |  | 2026-11-21 → 2026-11-28 (+7d) |  | 66.27d → 59.66d |
| MOD-SWN-PW-995 | Test Valve Chamber for Sewerage Network Zone 2 | 2026-11-21 → 2026-11-28 (+7d) | 2026-12-06 → 2026-12-13 (+7d) |  | 87.27d → 80.27d |
| MOD-SWN-PW-965 | Backfilling Valve Chamber for Sewerage Network Zone 2 | 2026-12-06 → 2026-12-13 (+7d) | 2026-12-21 → 2026-12-28 (+7d) |  | 87.27d → 80.27d |
| 2 | **Water Drain Chambers Construction** |  | 2026-12-30 → 2027-01-06 (+7d) |  |  |
| MOD-SWN-PW-1015 | Excavation Water Drain Chamber for Sewerage Network Zone 2 |  | 2026-11-11 → 2026-11-18 (+7d) |  | 68.1d → 61.49d |
| MOD-SWN-PW-1025 | Lean Concrete / Bedding Water Drain Chamber for Sewerage Network Zone 2 |  | 2026-11-19 → 2026-11-26 (+7d) | 60% → 70% | 68.1d → 61.49d |
| MOD-SWN-VF-134 | Water Drain Chambers Construction Water Drain Chamber for Sewerage Network Zone 2 |  | 2026-11-30 → 2026-12-07 (+7d) | 50% → 60% | 66.27d → 59.66d |
| MOD-SWN-PW-1035 | Test Water Drain Chamber for Sewerage Network Zone 2 | 2026-11-30 → 2026-12-07 (+7d) | 2026-12-15 → 2026-12-22 (+7d) |  | 77.77d → 70.77d |
| MOD-SWN-PW-1005 | Backfilling Water Drain Chamber for Sewerage Network Zone 2 | 2026-12-15 → 2026-12-22 (+7d) | 2026-12-30 → 2027-01-06 (+7d) |  | 77.77d → 70.77d |
| 3 | **Discharge Chambers Construction** |  | 2027-01-06 → 2027-01-13 (+7d) |  |  |
| MOD-SWN-PW-1055 | Excavation Discharge Chamber for Sewerage Network Zone 2 |  | 2026-11-15 → 2026-11-22 (+7d) |  | 71.3d → 65.74d |
| MOD-SWN-PW-1065 | Lean Concrete / Bedding Discharge Chamber for Sewerage Network Zone 2 |  | 2026-11-25 → 2026-12-01 (+6d) |  | 71.3d → 65.74d |
| MOD-SWN-VF-144 | Discharge Chambers Construction Discharge Chamber for Sewerage Network Zone 2 |  | 2026-12-07 → 2026-12-14 (+7d) |  | 66.27d → 59.66d |
| MOD-SWN-PW-1075 | Test Discharge Chamber for Sewerage Network Zone 2 | 2026-12-07 → 2026-12-14 (+7d) | 2026-12-22 → 2026-12-29 (+7d) |  | 71.27d → 64.66d |
| MOD-SWN-PW-1045 | Backfilling Discharge Chamber for Sewerage Network Zone 2 | 2026-12-22 → 2026-12-29 (+7d) | 2027-01-06 → 2027-01-13 (+7d) |  | 71.27d → 64.66d |
| 4 | **Flow Meter Chambers Construction** |  | 2027-01-11 → 2027-01-18 (+7d) |  |  |
| MOD-SWN-PW-1095 | Excavation Flow Meter Chamber for Sewerage Network Zone 2 |  | 2026-11-15 → 2026-11-22 (+7d) |  | 75.7d → 68.7d |
| MOD-SWN-PW-1105 | Lean Concrete / Bedding Flow Meter Chamber for Sewerage Network Zone 2 |  | 2026-11-27 → 2026-12-04 (+7d) |  | 75.7d → 68.7d |
| MOD-SWN-VF-154 | Flow Meter Chambers Construction Flow Meter Chamber for Sewerage Network Zone 2 | 2026-12-07 → 2026-12-14 (+7d) | 2026-12-12 → 2026-12-19 (+7d) |  | 66.27d → 59.66d |
| MOD-SWN-PW-1115 | Test Flow Meter Chamber for Sewerage Network Zone 2 | 2026-12-12 → 2026-12-19 (+7d) | 2026-12-27 → 2027-01-03 (+7d) |  | 66.27d → 59.66d |
| MOD-SWN-PW-1085 | Backfilling Flow Meter Chamber for Sewerage Network Zone 2 | 2026-12-27 → 2027-01-03 (+7d) | 2027-01-11 → 2027-01-18 (+7d) |  | 66.27d → 59.66d |
| 4 | **Manholes** |  | 2026-12-16 → 2026-12-23 (+7d) |  |  |
| 1 | **1200mm GRP Manholes with Backdrop** |  | 2026-12-07 → 2026-12-14 (+7d) |  |  |
| MOD-SWN-PW-1455 | Excavation 1.2m GRP for Sewerage Network Zone 2 |  | 2026-11-08 → 2026-11-15 (+7d) |  | 92.02d → 85.02d |
| MOD-SWN-PW-1465 | Lean Concrete / Bedding 1.2m GRP for Sewerage Network Zone 2 |  | 2026-11-10 → 2026-11-17 (+7d) |  | 92.02d → 85.02d |
| MOD-SWN-MH-145 | 1200mm GRP Manholes with Backdrop 1.2m GRP for Sewerage Network Zone 2 |  | 2026-11-12 → 2026-11-19 (+7d) |  | 92.02d → 85.02d |
| MOD-SWN-PW-1445 | Backfilling 1.2m GRP for Sewerage Network Zone 2 |  | 2026-12-07 → 2026-12-14 (+7d) |  | 101.37d → 94.37d |
| MOD-SWN-PW-1475 | Test 1.2m GRP for Sewerage Network Zone 2 | 2026-11-12 → 2026-11-19 (+7d) | 2026-11-27 → 2026-12-04 (+7d) |  | 101.37d → 94.37d |
| 2 | **1500mm GRP Manholes (Standard & Backdrop)** |  | 2026-12-09 → 2026-12-16 (+7d) |  |  |
| MOD-SWN-PW-1495 | Excavation 1.5m GRP for Sewerage Network Zone 2 |  | 2026-11-09 → 2026-11-16 (+7d) |  | 93.7d → 86.7d |
| MOD-SWN-PW-1505 | Lean Concrete / Bedding 1.5m GRP for Sewerage Network Zone 2 |  | 2026-11-11 → 2026-11-18 (+7d) |  | 93.7d → 86.7d |
| MOD-SWN-MH-155 | 1500mm GRP Manholes (Standard & Backdrop) 1.5m GRP for Sewerage Network Zone 2 |  | 2026-11-14 → 2026-11-21 (+7d) |  | 92.02d → 85.02d |
| MOD-SWN-PW-1485 | Backfilling 1.5m GRP for Sewerage Network Zone 2 |  | 2026-12-09 → 2026-12-16 (+7d) |  | 99.27d → 92.27d |
| MOD-SWN-PW-1515 | Test 1.5m GRP for Sewerage Network Zone 2 | 2026-11-14 → 2026-11-21 (+7d) | 2026-11-29 → 2026-12-06 (+7d) |  | 99.27d → 92.27d |
| 3 | **1800mm GRP Manholes (Standard & Backdrop)** |  | 2026-12-16 → 2026-12-23 (+7d) |  |  |
| MOD-SWN-PW-1535 | Excavation 1.8m GRP for Sewerage Network Zone 2 |  | 2026-11-08 → 2026-11-15 (+7d) |  | 97.06d → 90.06d |
| MOD-SWN-PW-1545 | Lean Concrete / Bedding 1.8m GRP for Sewerage Network Zone 2 |  | 2026-11-09 → 2026-11-16 (+7d) |  | 97.06d → 90.06d |
| MOD-SWN-MH-165 | 1800mm GRP Manholes (Standard & Backdrop) 1.8m GRP for Sewerage Network Zone 2 |  | 2026-11-16 → 2026-11-23 (+7d) |  | 92.02d → 85.02d |
| MOD-SWN-PW-1555 | Test 1.8m GRP for Sewerage Network Zone 2 | 2026-11-16 → 2026-11-23 (+7d) | 2026-12-01 → 2026-12-08 (+7d) |  | 92.02d → 85.02d |
| MOD-SWN-PW-1525 | Backfilling 1.8m GRP for Sewerage Network Zone 2 | 2026-12-01 → 2026-12-08 (+7d) | 2026-12-16 → 2026-12-23 (+7d) |  | 92.02d → 85.02d |
| 4 | **2000mm GRP Manholes (Standard & Backdrop)** |  | 2026-12-11 → 2026-12-18 (+7d) |  |  |
| MOD-SWN-PW-1575 | Excavation 2m GRP for Sewerage Network Zone 2 |  | 2026-11-08 → 2026-11-15 (+7d) |  | 103.08d → 96.08d |
| MOD-SWN-PW-1585 | Lean Concrete / Bedding 2m GRP for Sewerage Network Zone 2 |  | 2026-11-10 → 2026-11-17 (+7d) |  | 103.08d → 96.08d |
| MOD-SWN-MH-175 | 2000mm GRP Manholes (Standard & Backdrop) 2m GRP for Sewerage Network Zone 2 |  | 2026-11-17 → 2026-11-24 (+7d) |  | 96.97d → 89.97d |
| MOD-SWN-PW-1565 | Backfilling 2m GRP for Sewerage Network Zone 2 |  | 2026-12-11 → 2026-12-18 (+7d) |  | 96.97d → 89.97d |
| MOD-SWN-PW-1595 | Test 2m GRP for Sewerage Network Zone 2 | 2026-11-17 → 2026-11-24 (+7d) | 2026-12-02 → 2026-12-09 (+7d) |  | 96.97d → 89.97d |
| 6 | **Rainwater Drainage Network Zone 2** |  | 2026-12-14 → 2026-12-21 (+7d) |  |  |
| 1 | **Pipe Laying Works** |  | 2026-11-11 → 2026-11-18 (+7d) |  |  |
| 2 | **Supply & Installation of uPVC Pipes (250–300mm dia)** |  | 2026-11-08 → 2026-11-15 (+7d) |  |  |
| MOD-RWN-PL-753 | Laying of uPVC pipe UPVC for Rainwater Drainage Network Zone 2 |  | 2026-11-07 → 2026-11-14 (+7d) |  | -107.3d → -114.3d |
| MOD-RWN-PL-763 | Coating / Wrapping UPVC for Rainwater Drainage Network Zone 2 |  | 2026-11-07 → 2026-11-14 (+7d) |  | -103.6d → -110.6d |
| MOD-RWN-PL-773 | Test (Pressure-slope) UPVC for Rainwater Drainage Network Zone 2 |  | 2026-11-07 → 2026-11-14 (+7d) |  | -107.3d → -114.3d |
| MOD-RWN-PL-783 | Backfilling & Warning Tape UPVC for Rainwater Drainage Network Zone 2 |  | 2026-11-08 → 2026-11-15 (+7d) |  | -104.84d → -111.84d |
| 4 | **uPVC Connection Pipes (150mm dia)** |  | 2026-11-11 → 2026-11-18 (+7d) |  |  |
| MOD-RWN-PL-853 | Lean Concrete / bedding material UPVC Con. for Rainwater Drainage Network Zone 2 |  | 2026-11-07 → 2026-11-14 (+7d) |  | -107.26d → -114.26d |
| MOD-RWN-PL-863 | Lay & connect UPVC Con. for Rainwater Drainage Network Zone 2 |  | 2026-11-07 → 2026-11-14 (+7d) |  | -107.3d → -114.3d |
| MOD-RWN-PL-873 | Test (Pressure-slope) UPVC Con. for Rainwater Drainage Network Zone 2 |  | 2026-11-07 → 2026-11-14 (+7d) |  | -107.3d → -114.3d |
| MOD-RWN-PL-883 | Backfilling & compaction UPVC Con. for Rainwater Drainage Network Zone 2 |  | 2026-11-11 → 2026-11-18 (+7d) |  | -107.3d → -114.3d |
| MOD-RWN-PL-903 | Coating / Wrapping UPVC Con. for Rainwater Drainage Network Zone 2 |  | 2026-11-11 → 2026-11-18 (+7d) |  | -107.3d → -114.3d |
| 5 | **Precast Concrete Box Culverts** |  | 2026-12-14 → 2026-12-21 (+7d) |  |  |
| 1 | **Box Culverts (500x500mm to 3500x800mm)** |  | 2026-12-14 → 2026-12-21 (+7d) |  |  |
| MOD-RWN-PC-34 | Excavation to required depth Box culvert for Rainwater Drainage Network Zone 2 |  | 2026-11-08 → 2026-11-15 (+7d) |  | -119.99d → -125.99d |
| MOD-RWN-PC-44 | Dewatering and trench shoring Box culvert for Rainwater Drainage Network Zone 2 |  | 2026-11-10 → 2026-11-17 (+7d) |  | -119.99d → -125.99d |
| MOD-RWN-PC-54 | Bedding preparation (gravel/lean concrete) Box culvert for Rainwater Drainage Network Zone 2 |  | 2026-11-14 → 2026-11-21 (+7d) |  | -119.99d → -125.99d |
| MOD-RWN-PC-64 | Installation of box culvert units Box culvert for Rainwater Drainage Network Zone 2 | 2026-11-14 → 2026-11-21 (+7d) | 2026-11-19 → 2026-11-26 (+7d) |  | -119.99d → -125.99d |
| MOD-RWN-PC-74 | Alignment and joint sealing Box culvert for Rainwater Drainage Network Zone 2 | 2026-11-19 → 2026-11-26 (+7d) | 2026-11-24 → 2026-12-01 (+7d) |  | -119.61d → -125.61d |
| MOD-RWN-PC-84 | Construct headwalls/wing walls (if needed) Box culvert for Rainwater Drainage Network Zone 2 | 2026-11-24 → 2026-12-01 (+7d) | 2026-12-02 → 2026-12-09 (+7d) |  | -119.61d → -125.61d |
| MOD-RWN-PC-94 | Backfilling and compaction Box culvert for Rainwater Drainage Network Zone 2 | 2026-12-02 → 2026-12-09 (+7d) | 2026-12-09 → 2026-12-16 (+7d) |  | -119.61d → -125.61d |
| MOD-RWN-PC-104 | Surface finishing Box culvert for Rainwater Drainage Network Zone 2 | 2026-12-10 → 2026-12-17 (+7d) | 2026-12-14 → 2026-12-21 (+7d) |  | -119.61d → -125.61d |
| 2 | **Tube Culverts at Road Intersections** |  | 2026-11-14 → 2026-11-21 (+7d) |  |  |

| ID | Task | Start | Finish | Total float |
| --- | --- | --- | --- | --- |
| MOD-RWN-PC-124 | Trench excavation under road Tube culvert for Rainwater Drainage Network Zone 2 |  | 2026-11-14 → 2026-11-21 (+7d) | -93.51d → -99.51d |
| 3 | **Box Culverts at Road Intersections** |  | 2026-12-08 → 2026-12-15 (+7d) |  |
| MOD-RWN-PC-184 | Place bedding material for Rainwater Drainage Network Zone 2 |  | 2026-11-08 → 2026-11-15 (+7d) | -114.96d → -120.96d |
| MOD-RWN-PC-194 | Install precast box culvert for Rainwater Drainage Network Zone 2 | 2026-11-09 → 2026-11-16 (+7d) | 2026-11-12 → 2026-11-19 (+7d) | -114.96d → -120.96d |
| MOD-RWN-PC-204 | Construct connection chambers (if needed) for Rainwater Drainage Network Zone 2 | 2026-11-14 → 2026-11-21 (+7d) | 2026-11-14 → 2026-11-21 (+7d) | -114.96d → -120.96d |
| MOD-RWN-PC-214 | Joint treatment and testing for Rainwater Drainage Network Zone 2 | 2026-11-15 → 2026-11-22 (+7d) | 2026-11-28 → 2026-12-05 (+7d) | -114.96d → -120.96d |
| MOD-RWN-PC-224 | Backfilling and surface reinstatement for Rainwater Drainage Network Zone 2 | 2026-11-29 → 2026-12-06 (+7d) | 2026-12-08 → 2026-12-15 (+7d) | -114.96d → -120.96d |
| 4 | **Manholes** |  | 2026-12-14 → 2026-12-21 (+7d) |  |
| 1 | **Circular GRP Manholes (1200–1800mm dia)** |  | 2026-11-26 → 2026-12-03 (+7d) |  |
| MOD-RWN-MH-34 | Dewatering and safety barriers Circular Manhole for Rainwater Drainage Network Zone 2 |  | 2026-11-15 → 2026-11-22 (+7d) | -104.66d → -110.66d |
| MOD-RWN-MH-44 | Concrete base construction Circular Manhole for Rainwater Drainage Network Zone 2 |  | 2026-11-16 → 2026-11-23 (+7d) | -104.66d → -110.66d |
| MOD-RWN-MH-54 | Install GRP manhole shaft sections Circular Manhole for Rainwater Drainage Network Zone 2 |  | 2026-11-18 → 2026-11-25 (+7d) | -104.66d → -110.66d |
| MOD-RWN-MH-64 | Place slab and cover frame Circular Manhole for Rainwater Drainage Network Zone 2 |  | 2026-11-21 → 2026-11-28 (+7d) | -104.66d → -110.66d |
| MOD-RWN-MH-74 | Waterproofing Circular Manhole for Rainwater Drainage Network Zone 2 | 2026-11-21 → 2026-11-28 (+7d) | 2026-11-23 → 2026-11-30 (+7d) | -104.66d → -110.66d |
| MOD-RWN-MH-84 | Backfilling and compaction Circular Manhole for Rainwater Drainage Network Zone 2 | 2026-11-24 → 2026-12-01 (+7d) | 2026-11-26 → 2026-12-03 (+7d) | -104.66d → -110.66d |
| 3 | **Concrete Manholes for 1500x1500 Box Pipes** |  | 2026-11-29 → 2026-12-06 (+7d) |  |
| MOD-RWN-MH-174 | Base slab and wall shuttering Concrete Manhole 1.5x1.5 for Rainwater Drainage Network Zone 2 |  | 2026-11-15 → 2026-11-22 (+7d) | -106.66d → -112.66d |
| MOD-RWN-MH-184 | Wall reinforcement and casting Concrete Manhole 1.5x1.5 for Rainwater Drainage Network Zone 2 |  | 2026-11-18 → 2026-11-25 (+7d) | -106.66d → -112.66d |
| MOD-RWN-MH-194 | Roof slab with openings Concrete Manhole 1.5x1.5 for Rainwater Drainage Network Zone 2 |  | 2026-11-21 → 2026-11-28 (+7d) | -106.66d → -112.66d |
| MOD-RWN-MH-204 | Masonry/benching works inside Concrete Manhole 1.5x1.5 for Rainwater Drainage Network Zone 2 | 2026-11-21 → 2026-11-28 (+7d) | 2026-11-23 → 2026-11-30 (+7d) | -106.66d → -112.66d |
| MOD-RWN-MH-214 | Install cover and frame Concrete Manhole 1.5x1.5 for Rainwater Drainage Network Zone 2 | 2026-11-23 → 2026-11-30 (+7d) | 2026-11-25 → 2026-12-02 (+7d) | -106.66d → -112.66d |
| MOD-RWN-MH-224 | Backfill in layers Concrete Manhole 1.5x1.5 for Rainwater Drainage Network Zone 2 | 2026-11-25 → 2026-12-02 (+7d) | 2026-11-29 → 2026-12-06 (+7d) | -106.66d → -112.66d |
| 2 | **Concrete Manholes for 1000x1000 Box Pipes** |  | 2026-12-14 → 2026-12-21 (+7d) |  |
| MOD-RWN-MH-94 | Excavation Concrete Manhole 1x1 for Rainwater Drainage Network Zone 2 |  | 2026-11-15 → 2026-11-22 (+7d) | -119.99d → -125.99d |
| MOD-RWN-MH-104 | Base slab and wall shuttering Concrete Manhole 1x1 for Rainwater Drainage Network Zone 2 | 2026-11-15 → 2026-11-22 (+7d) | 2026-11-17 → 2026-11-24 (+7d) | -119.99d → -125.99d |
| MOD-RWN-MH-114 | Wall reinforcement and casting Concrete Manhole 1x1 for Rainwater Drainage Network Zone 2 | 2026-11-17 → 2026-11-24 (+7d) | 2026-11-23 → 2026-11-30 (+7d) | -119.99d → -125.99d |
| MOD-RWN-MH-124 | Roof slab with openings Concrete Manhole 1x1 for Rainwater Drainage Network Zone 2 | 2026-11-23 → 2026-11-30 (+7d) | 2026-11-30 → 2026-12-07 (+7d) | -119.99d → -125.99d |
| MOD-RWN-MH-134 | Masonry/benching works inside Concrete Manhole 1x1 for Rainwater Drainage Network Zone 2 | 2026-11-30 → 2026-12-07 (+7d) | 2026-12-06 → 2026-12-13 (+7d) | -119.99d → -125.99d |
| MOD-RWN-MH-144 | Install cover and frame Concrete Manhole 1x1 for Rainwater Drainage Network Zone 2 | 2026-12-06 → 2026-12-13 (+7d) | 2026-12-10 → 2026-12-17 (+7d) | -119.99d → -125.99d |
| MOD-RWN-MH-154 | Backfill in layers Concrete Manhole 1x1 for Rainwater Drainage Network Zone 2 | 2026-12-10 → 2026-12-17 (+7d) | 2026-12-14 → 2026-12-21 (+7d) | -119.99d → -125.99d |
| 3 | **Gully Outfalls to Swales** |  | 2026-11-29 → 2026-12-06 (+7d) |  |
| 1 | **Gully Outfalls to Swales** |  | 2026-11-18 → 2026-11-25 (+7d) |  |
| MOD-RWN-GO-21 | Excavate outfall channel Gully Outfall to Swales for Rainwater Drainage Network Zone 2 |  | 2026-11-14 → 2026-11-21 (+7d) | -97.61d → -103.61d |
| MOD-RWN-GO-31 | Place concrete apron or pipes Gully Outfall to Swales for Rainwater Drainage Network Zone 2 |  | 2026-11-15 → 2026-11-22 (+7d) | -97.61d → -103.61d |
| MOD-RWN-GO-41 | Provide slope protection (riprap) Gully Outfall to Swales for Rainwater Drainage Network Zone 2 |  | 2026-11-15 → 2026-11-22 (+7d) | -97.61d → -103.61d |
| MOD-RWN-GO-51 | Compact and shape terrain Gully Outfall to Swales for Rainwater Drainage Network Zone 2 | 2026-11-16 → 2026-11-23 (+7d) | 2026-11-18 → 2026-11-25 (+7d) | -97.61d → -103.61d |
| 2 | **Riprap Works & Protection** |  | 2026-11-29 → 2026-12-06 (+7d) |  |
| MOD-RWN-GO-61 | Lay filter fabric/membrane for Rainwater Drainage Network Zone 2 |  | 2026-11-15 → 2026-11-22 (+7d) | -106.41d → -112.41d |
| MOD-RWN-GO-71 | Place riprap/stone layer for Rainwater Drainage Network Zone 2 |  | 2026-11-19 → 2026-11-26 (+7d) | -106.41d → -112.41d |
| MOD-RWN-GO-81 | Compact edges for Rainwater Drainage Network Zone 2 | 2026-11-19 → 2026-11-26 (+7d) | 2026-11-25 → 2026-12-02 (+7d) | -106.41d → -112.41d |
| MOD-RWN-GO-91 | Ensure hydraulic flow direction for Rainwater Drainage Network Zone 2 | 2026-11-25 → 2026-12-02 (+7d) | 2026-11-29 → 2026-12-06 (+7d) | -106.41d → -112.41d |
| 6 | **Backfilling & Bedding** |  | 2026-11-16 → 2026-11-23 (+7d) |  |
| 2 | **Gravel Bedding & Filter Cloth for uPVC Drain Pipes** |  | 2026-11-16 → 2026-11-23 (+7d) |  |
| MOD-RWN-BB-102 | Final fill and trench restoration for Rainwater Drainage Network Zone 2 |  | 2026-11-16 → 2026-11-23 (+7d) | -95.75d → -101.75d |
| MOD-RWN-BB-62 | Line trench with filter cloth for Rainwater Drainage Network Zone 2 |  | 2026-11-09 → 2026-11-16 (+7d) | -95.75d → -101.75d |
| MOD-RWN-BB-72 | Place and compact gravel bedding for Rainwater Drainage Network Zone 2 |  | 2026-11-09 → 2026-11-16 (+7d) | -95.75d → -101.75d |
| MOD-RWN-BB-82 | Lay pipe within gravel zone for Rainwater Drainage Network Zone 2 |  | 2026-11-11 → 2026-11-18 (+7d) | -95.75d → -101.75d |
| MOD-RWN-BB-92 | Wrap filter cloth above pipe for Rainwater Drainage Network Zone 2 |  | 2026-11-14 → 2026-11-21 (+7d) | -95.75d → -101.75d |
| 1 | **Potable Water Network Zone 2** |  | 2026-12-23 → 2026-12-30 (+7d) |  |
| 1 | **Pipe Installation Works** |  | 2026-11-08 → 2026-11-15 (+7d) |  |
| MOD-PWN-PI-153 | Lean Concrete / Pipe Bedding Preparation for Potable Water Network Zone 2 |  | 2026-11-07 → 2026-11-14 (+7d) | 53d → 46d |
| MOD-PWN-PI-163 | HDPE Pipe Laying (200 mm to 710 mm) for Potable Water Network Zone 2 |  | 2026-11-07 → 2026-11-14 (+7d) | 53d → 46d |
| MOD-PWN-PI-173 | Test (Pressure-slope) for Potable Water Network Zone 2 |  | 2026-11-07 → 2026-11-14 (+7d) | 53d → 46d |
| MOD-PWN-PI-203 | Coating / Wrapping for Potable Water Network Zone 2 |  | 2026-11-08 → 2026-11-15 (+7d) | 53d → 46d |
| MOD-PWN-PI-213 | Backfilling & Warrning Tape for Potable Water Network Zone 2 |  | 2026-11-08 → 2026-11-15 (+7d) | 53d → 46d |
| 2 | **Valve Installation & Chambers** |  | 2026-11-12 → 2026-11-19 (+7d) |  |
| MOD-PWN-VC-37 | Valve Chamber Excavation for Potable Water Network Zone 2 |  | 2026-11-07 → 2026-11-14 (+7d) | 26.56d → 20.56d |
| MOD-PWN-VC-47 | RC Slab, Walls, or Precast Chambers for Potable Water Network Zone 2 |  | 2026-11-07 → 2026-11-14 (+7d) | 42.08d → 36.08d |
| MOD-PWN-VC-7 | Gate Valves (225–710 mm) for Potable Water Network Zone 2 |  | 2026-11-07 → 2026-11-14 (+7d) | 42.44d → 36.44d |
| MOD-PWN-VC-17 | Butterfly Valves (355, 500, 630 mm) for Potable Water Network Zone 2 |  | 2026-11-07 → 2026-11-14 (+7d) | 42.44d → 36.44d |
| MOD-PWN-VC-27 | 3-exit (2 x 2.5-inch and 1 x 4-inch) dry vacuum cylinder detachable fire nozzle for Potable Water Network Zone 2 |  | 2026-11-07 → 2026-11-14 (+7d) | 42.44d → 36.44d |
| MOD-PWN-VC-57 | Fixing Covers, Gratings, Frames for Potable Water Network Zone 2 |  | 2026-11-08 → 2026-11-15 (+7d) | 42.08d → 36.08d |
| MOD-PWN-VC-67 | Tagging & Painting for Potable Water Network Zone 2 | 2026-11-08 → 2026-11-15 (+7d) | 2026-11-12 → 2026-11-19 (+7d) | 42.08d → 36.08d |
| 3 | **Flow Meter Installation** |  | 2026-12-23 → 2026-12-30 (+7d) |  |
| MOD-PWN-FM-5 | Chamber Excavation (280 mm, 300 mm, 500 mm, 800 mm) for Potable Water Network Zone 2 |  | 2026-11-08 → 2026-11-15 (+7d) | 26.56d → 20.56d |
| MOD-PWN-FM-15 | RC or Precast Chamber Construction for Potable Water Network Zone 2 |  | 2026-11-10 → 2026-11-17 (+7d) | 26.56d → 20.56d |
| MOD-PWN-FM-25 | Flowmeter Installation & Pipe Integration for Potable Water Network Zone 2 |  | 2026-12-10 → 2026-12-17 (+7d) | 7.15d → 1.15d |
| MOD-PWN-FM-35 | Wiring/Cabling if applicable for Potable Water Network Zone 2 | 2026-12-10 → 2026-12-17 (+7d) | 2026-12-20 → 2026-12-27 (+7d) | 7.15d → 1.15d |
| MOD-PWN-FM-45 | Calibration & Commissioning for Potable Water Network Zone 2 | 2026-12-20 → 2026-12-27 (+7d) | 2026-12-23 → 2026-12-30 (+7d) | 7.15d → 1.15d |
| 4 | **Washout & Air Valve Chambers** |  | 2026-11-12 → 2026-11-19 (+7d) |  |

| ID | Task | Start | Finish | Complete | Total float |
| --- | --- | --- | --- | --- | --- |
| MOD-PWN-WA-27 | Pipe Work for Potable Water Network Zone 2 |  | 2026-11-08 → 2026-11-15 (+7d) |  | 42.1d → 36.1d |
| MOD-PWN-WA-37 | Washout (Valve + Outlet) Installation for Potable Water Network Zone 2 |  | 2026-11-08 → 2026-11-15 (+7d) |  | 42.1d → 36.1d |
| MOD-PWN-WA-47 | Air Valve Rooms (Valve + Outlet) Installation for Potable Water Network Zone 2 |  | 2026-11-09 → 2026-11-16 (+7d) |  | 42.1d → 36.1d |
| MOD-PWN-WA-57 | Covers, Ladders & Tags for Potable Water Network Zone 2 |  | 2026-11-10 → 2026-11-17 (+7d) |  | 42.1d → 36.1d |
| MOD-PWN-WA-67 | Backfilling & Final Finishing for Potable Water Network Zone 2 | 2026-11-10 → 2026-11-17 (+7d) | 2026-11-12 → 2026-11-19 (+7d) |  | 42.1d → 36.1d |
| 2 | **Irrigation Network Zone 2** |  | 2026-12-10 → 2026-12-17 (+7d) |  |  |
| 1 | **Excavation, Pipe Laying & Backfilling** |  | 2026-11-09 → 2026-11-16 (+7d) |  |  |
| MOD-IRN-EB-340 | Lean Concrete / Pipe Bedding with Type B Material for Irrigation Network Zone 2 |  | 2026-11-07 → 2026-11-14 (+7d) |  | 52.2d → 45.2d |
| MOD-IRN-EB-350 | HDPE Pipe Laying (125 mm to 630 mm) for Irrigation Network Zone 2 |  | 2026-11-07 → 2026-11-14 (+7d) |  | 52.2d → 45.2d |
| MOD-IRN-EB-360 | Test (Pressure-slope) for Irrigation Network Zone 2 |  | 2026-11-08 → 2026-11-15 (+7d) | 90% → 93% | 52.2d → 45.2d |
| MOD-IRN-EB-370 | Coating / Wrapping for Irrigation Network Zone 2 |  | 2026-11-08 → 2026-11-15 (+7d) | 90% → 93% | 52.2d → 45.2d |
| MOD-IRN-EB-380 | Backfilling & Warrning Tape for Irrigation Network Zone 2 |  | 2026-11-09 → 2026-11-16 (+7d) |  | 52.2d → 45.2d |
| 2 | **Valves and Appurtenances** |  | 2026-11-09 → 2026-11-16 (+7d) |  |  |
| MOD-IRN-VA-5 | Supply & Installation of Valves (Gate Valve) for Irrigation Network Zone 2 |  | 2026-11-07 → 2026-11-14 (+7d) |  | 40.2d → 34.2d |
| MOD-IRN-VA-15 | Supply & Installation of Valves (Butterfly Valve) for Irrigation Network Zone 2 |  | 2026-11-07 → 2026-11-14 (+7d) |  | 40.2d → 34.2d |
| MOD-IRN-VA-25 | Installation of Flanges, Bolts, Collars, Nuts for Irrigation Network Zone 2 |  | 2026-11-08 → 2026-11-15 (+7d) |  | 40.2d → 34.2d |
| MOD-IRN-VA-35 | Valve Pressure Testing for Irrigation Network Zone 2 |  | 2026-11-08 → 2026-11-15 (+7d) |  | 44.7d → 38.7d |
| MOD-IRN-VA-45 | Support Brackets/Anchor Blocks for Irrigation Network Zone 2 |  | 2026-11-09 → 2026-11-16 (+7d) |  | 44.7d → 38.7d |
| 3 | **Valve Rooms** |  | 2026-11-08 → 2026-11-15 (+7d) |  |  |
| MOD-IRN-VR-67 | Backfilling and Finishing Valve Chamber for Irrigation Network Zone 2 |  | 2026-11-08 → 2026-11-15 (+7d) |  | 46d → 40d |
| 4 | **Washout Chambers** |  | 2026-11-08 → 2026-11-15 (+7d) |  |  |
| MOD-IRN-WC-46 | Manhole Frame, Cover & Ladder Fixing Washout Chamber for Irrigation Network Zone 2 |  | 2026-11-07 → 2026-11-14 (+7d) |  | 46.35d → 40.35d |
| MOD-IRN-WC-56 | Backfilling & Reinstatement Washout Chamber for Irrigation Network Zone 2 |  | 2026-11-08 → 2026-11-15 (+7d) |  | 46.35d → 40.35d |
| 6 | **Flow Meter Chambers** |  | 2026-12-10 → 2026-12-17 (+7d) |  |  |
| MOD-IRN-FC-16 | RCC Base & Wall Construction Flow Meter Chamber for Irrigation Network Zone 2 |  | 2026-11-08 → 2026-11-15 (+7d) |  | 40.2d → 34.2d |
| MOD-IRN-FC-26 | Flow Meter Installation (280, 300, 500 mm) Flow Meter Chamber for Irrigation Network Zone 2 |  | 2026-12-03 → 2026-12-10 (+7d) |  | 18.25d → 12.25d |
| MOD-IRN-FC-36 | Integration with Pipework Flow Meter Chamber for Irrigation Network Zone 2 |  | 2026-12-05 → 2026-12-12 (+7d) |  | 18.25d → 12.25d |
| MOD-IRN-FC-46 | Testing & Calibration Flow Meter Chamber for Irrigation Network Zone 2 |  | 2026-12-07 → 2026-12-14 (+7d) |  | 18.25d → 12.25d |
| MOD-IRN-FC-56 | Cover and Access Arrangement Flow Meter Chamber for Irrigation Network Zone 2 | 2026-12-07 → 2026-12-14 (+7d) | 2026-12-10 → 2026-12-17 (+7d) |  | 18.25d → 12.25d |
| 3 | **Rainwater Collection Ponds Zone 2** |  | 2027-04-01 → 2027-04-08 (+7d) |  |  |
| 10 | **Excavation for Rainwater Drainage Pond** |  | 2027-01-09 → 2027-01-16 (+7d) |  |  |
| 11 | **Deep excavation, backfill, disposal for pond formation** |  | 2027-01-09 → 2027-01-16 (+7d) |  |  |
| MOD-RCP-ER-18 | Excavate in layers to final depth for Rainwater Collection Ponds Zone 2 |  | 2027-01-02 → 2027-01-09 (+7d) |  | 92d → 86d |
| MOD-RCP-ER-28 | Dewater during excavation for Rainwater Collection Ponds Zone 2 |  | 2027-01-03 → 2027-01-10 (+7d) |  | 92d → 86d |
| MOD-RCP-ER-38 | Place warning tapes for Rainwater Collection Ponds Zone 2 |  | 2027-01-03 → 2027-01-10 (+7d) |  | 92d → 86d |
| MOD-RCP-ER-48 | Dispose of rock/materials to approved dump area for Rainwater Collection Ponds Zone 2 |  | 2027-01-04 → 2027-01-11 (+7d) |  | 92d → 86d |
| MOD-RCP-ER-58 | Backfill selected areas as per design for Rainwater Collection Ponds Zone 2 | 2027-01-04 → 2027-01-11 (+7d) | 2027-01-06 → 2027-01-13 (+7d) |  | 92d → 86d |
| MOD-RCP-ER-68 | Final trimming and profiling for Rainwater Collection Ponds Zone 2 | 2027-01-06 → 2027-01-13 (+7d) | 2027-01-09 → 2027-01-16 (+7d) |  | 92d → 86d |
| 2 | **Backfilling Works** |  | 2027-01-16 → 2027-01-23 (+7d) |  |  |
| MOD-RCP-BW-15 | Place in layers not exceeding 300mm for Rainwater Collection Ponds Zone 2 |  | 2027-01-07 → 2027-01-14 (+7d) | 90% → 92% | 85.9d → 79.9d |
| MOD-RCP-BW-5 | Select material from excavation or import approved material for Rainwater Collection Ponds Zone 2 |  | 2027-01-05 → 2027-01-12 (+7d) | 90% → 92% | 36.8d → 30.8d |
| MOD-RCP-BW-25 | Compact each layer to required density for Rainwater Collection Ponds Zone 2 |  | 2027-01-10 → 2027-01-17 (+7d) | 90% → 92% | 85.9d → 79.9d |
| MOD-RCP-BW-35 | Conduct field density tests for Rainwater Collection Ponds Zone 2 |  | 2027-01-10 → 2027-01-17 (+7d) |  | 85.9d → 79.9d |
| MOD-RCP-BW-45 | Final leveling and approval for Rainwater Collection Ponds Zone 2 | 2027-01-10 → 2027-01-17 (+7d) | 2027-01-16 → 2027-01-23 (+7d) |  | 85.9d → 79.9d |
| 12 | **Geotextile & Bedding** |  | 2027-03-23 → 2027-03-30 (+7d) |  |  |
| 13 | **Installation of geotextile lining and coarse sand bedding** |  | 2027-03-23 → 2027-03-30 (+7d) |  |  |
| MOD-RCP-GB-15 | Lay HDPE geotextile membrane over compacted soil for Rainwater Collection Ponds Zone 2 |  | 2027-01-19 → 2027-01-26 (+7d) |  | 36.8d → 30.8d |
| MOD-RCP-GB-25 | Place 500mm thick coarse sand bedding for Rainwater Collection Ponds Zone 2 |  | 2027-02-17 → 2027-03-02 (+13d) |  | 36.8d → 30.8d |
| MOD-RCP-GB-35 | Compact and level bedding for Rainwater Collection Ponds Zone 2 | 2027-02-17 → 2027-03-02 (+13d) | 2027-03-23 → 2027-03-30 (+7d) |  | 36.8d → 30.8d |
| 3 | **Concrete Structures** |  | 2027-04-01 → 2027-04-08 (+7d) |  |  |
| 4 | **Construction of pond slab, walls, vertical structures** |  | 2027-04-01 → 2027-04-08 (+7d) |  |  |
| MOD-RCP-CS-30 | Install formwork and reinforcement for Rainwater Collection Ponds Zone 2 |  | 2027-04-01 → 2027-04-08 (+7d) |  | 36.8d → 30.8d |
| 4 | **Road Crossing Zone 2** | 2026-12-31 → 2027-01-07 (+7d) | 2027-08-02 → 2027-08-09 (+7d) |  |  |
| 14 | **uPVC Road Crossing Pipes** | 2026-12-31 → 2027-01-07 (+7d) | 2027-04-07 → 2027-04-14 (+7d) |  |  |
| 15 | **Installation of uPVC pipes of various diameters crossing roadways** | 2026-12-31 → 2027-01-07 (+7d) | 2027-04-07 → 2027-04-14 (+7d) |  |  |
| MOD-ROC-PV-10 | Demarcation and traffic diversion (if required) for Road Crossing Zone 2 | 2026-12-31 → 2027-01-07 (+7d) | 2027-01-07 → 2027-01-14 (+7d) |  | -131d → -137d |
| MOD-ROC-PV-20 | Saw cutting and removal of asphalt (if applicable) for Road Crossing Zone 2 | 2027-01-07 → 2027-01-14 (+7d) | 2027-01-21 → 2027-01-28 (+7d) |  | -131d → -137d |
| MOD-ROC-PV-30 | Excavation across road width to required depth for Road Crossing Zone 2 | 2027-01-21 → 2027-01-28 (+7d) | 2027-02-02 → 2027-02-11 (+9d) |  | -131d → -137d |
| MOD-ROC-PV-40 | Preparation of trench base with compacted bedding for Road Crossing Zone 2 | 2027-02-02 → 2027-02-11 (+9d) | 2027-02-09 → 2027-02-21 (+12d) |  | -131d → -137d |
| MOD-ROC-PV-50 | Laying of uPVC pipe (300mm, 315mm, 400mm, 600mm dia) for Road Crossing Zone 2 | 2027-02-09 → 2027-02-21 (+12d) | 2027-03-02 → 2027-03-16 (+14d) |  | -131d → -137d |
| MOD-ROC-PV-60 | Placement of supports and protection around the pipe for Road Crossing Zone 2 | 2027-03-02 → 2027-03-17 (+15d) | 2027-03-15 → 2027-03-22 (+7d) |  | -131d → -137d |
| MOD-ROC-PV-70 | Testing of installed pipeline for Road Crossing Zone 2 | 2027-03-16 → 2027-03-23 (+7d) | 2027-03-22 → 2027-03-29 (+7d) |  | -131d → -137d |
| MOD-ROC-PV-80 | Backfilling and compaction in layers for Road Crossing Zone 2 | 2027-03-23 → 2027-03-30 (+7d) | 2027-03-31 → 2027-04-07 (+7d) |  | -131d → -137d |
| MOD-ROC-PV-90 | Reinstatement of road surface for Road Crossing Zone 2 | 2027-04-01 → 2027-04-08 (+7d) | 2027-04-07 → 2027-04-14 (+7d) |  | -131d → -137d |
| 16 | **GRP Road Crossing Pipes** | 2027-04-08 → 2027-04-15 (+7d) | 2027-08-02 → 2027-08-09 (+7d) |  |  |
| 17 | **Installation of GRP pipes (800mm–1000mm dia) for road crossings** | 2027-04-08 → 2027-04-15 (+7d) | 2027-08-02 → 2027-08-09 (+7d) |  |  |
| MOD-ROC-GR-10 | Set out location and coordinate with road authority for Road Crossing Zone 2 | 2027-04-08 → 2027-04-15 (+7d) | 2027-04-13 → 2027-04-20 (+7d) |  | -131d → -137d |
| MOD-ROC-GR-20 | Excavate trench across road at designed depth for Road Crossing Zone 2 | 2027-04-14 → 2027-04-21 (+7d) | 2027-04-27 → 2027-05-04 (+7d) |  | -131d → -137d |
| MOD-ROC-GR-30 | Lay compacted granular bedding for Road Crossing Zone 2 | 2027-04-28 → 2027-05-05 (+7d) | 2027-05-20 → 2027-05-27 (+7d) |  | -131d → -137d |
| MOD-ROC-GR-40 | Install GRP pipe (800mm & 1000mm dia) for Road Crossing Zone 2 | 2027-05-22 → 2027-05-29 (+7d) | 2027-06-14 → 2027-06-21 (+7d) |  | -131d → -137d |

| ID | Task | Start | Finish | Complete | Total float |
| --- | --- | --- | --- | --- | --- |
| MOD-ROC-GR-50 | Provide structural supports and closure at both ends for Road Crossing Zone 2 | 2027-06-15 → 2027-06-22 (+7d) | 2027-06-24 → 2027-07-01 (+7d) |  | -131d → -137d |
| MOD-ROC-GR-60 | Perform leak testing as per specifications for Road Crossing Zone 2 | 2027-06-26 → 2027-07-03 (+7d) | 2027-06-30 → 2027-07-07 (+7d) |  | -131d → -137d |
| MOD-ROC-GR-70 | Backfill and compact in layers for Road Crossing Zone 2 | 2027-07-01 → 2027-07-08 (+7d) | 2027-07-18 → 2027-07-25 (+7d) |  | -131d → -137d |
| MOD-ROC-GR-80 | Reinstate road surface (asphalt/concrete) for Road Crossing Zone 2 | 2027-07-19 → 2027-07-26 (+7d) | 2027-07-27 → 2027-08-03 (+7d) |  | -131d → -137d |
| MOD-ROC-GR-90 | Final inspection and approval by relevant authority for Road Crossing Zone 2 | 2027-07-28 → 2027-08-04 (+7d) | 2027-08-02 → 2027-08-09 (+7d) |  | -131d → -137d |
| 6 | **Zone 1** |  | 2027-10-19 → 2027-10-26 (+7d) |  |  |
| 1 | **Sewerage Network Zone 1** |  | 2027-04-18 → 2027-04-25 (+7d) |  |  |
| 1 | **Pipework: Supply, Installation, and Testing** |  | 2026-11-12 → 2026-11-19 (+7d) |  |  |
| 3 | **HDPE Pressure Pipes Installation (250mm–630mm)** |  | 2026-11-12 → 2026-11-19 (+7d) |  |  |
| MOD-SWN-PW-775 | Lean Concrete / Bedding HDPE for Sewerage Network Zone 1 |  | 2026-11-08 → 2026-11-15 (+7d) |  | 81.15d → 74.15d |
| MOD-SWN-PW-785 | Test (Pressure - Slope) HDPE for Sewerage Network Zone 1 |  | 2026-11-08 → 2026-11-15 (+7d) |  | 126.6d → 119.6d |
| MOD-SWN-PW-755 | Backfilling & Warrning Tape HDPE for Sewerage Network Zone 1 |  | 2026-11-12 → 2026-11-19 (+7d) |  | 126.6d → 119.6d |
| 2 | **Fittings and Valves** | 2026-11-08 → 2026-11-15 (+7d) | 2026-12-09 → 2026-12-16 (+7d) |  |  |
| MOD-SWN-FV-001 | Supply & Installation of HDPE Elbows for Sewerage Network Zone 1 | 2026-11-08 → 2026-11-15 (+7d) | 2026-11-15 → 2026-11-22 (+7d) |  | 70.15d → 64.15d |
| MOD-SWN-FV-002 | Gate Valves Installation for Sewerage Network Zone 1 | 2026-11-15 → 2026-11-22 (+7d) | 2026-11-19 → 2026-11-26 (+7d) |  | 70.15d → 64.15d |
| MOD-SWN-FV-003 | Drain Valves Installation for Sewerage Network Zone 1 | 2026-11-19 → 2026-11-26 (+7d) | 2026-11-24 → 2026-12-01 (+7d) |  | 70.15d → 64.15d |
| MOD-SWN-FV-004 | Air Breather & Air Release Valves Installation for Sewerage Network Zone 1 | 2026-11-24 → 2026-12-01 (+7d) | 2026-12-06 → 2026-12-13 (+7d) |  | 70.15d → 64.15d |
| MOD-SWN-FV-005 | Jointing & Piping Accessories Installation for Sewerage Network Zone 1 | 2026-12-06 → 2026-12-13 (+7d) | 2026-12-09 → 2026-12-16 (+7d) |  | 70.15d → 64.15d |
| 3 | **Valve & Flow Meter Chambers** |  | 2027-01-17 → 2027-01-23 (+6d) |  |  |
| 1 | **Valve Chambers Construction** |  | 2026-12-31 → 2027-01-07 (+7d) |  |  |
| MOD-SWN-PW-1135 | Excavation Valve Chamber for Sewerage Network Zone 1 |  | 2026-11-16 → 2026-11-23 (+7d) |  | 60.35d → 54.65d |
| MOD-SWN-PW-1145 | Lean Concrete / Bedding Valve Chamber for Sewerage Network Zone 1 |  | 2026-11-27 → 2026-12-04 (+7d) |  | 60.35d → 54.65d |
| MOD-SWN-VF-164 | Valve Chambers Construction Valve Chamber for Sewerage Network Zone 1 |  | 2026-12-01 → 2026-12-08 (+7d) |  | 60.35d → 54.65d |
| MOD-SWN-PW-1155 | Test Valve Chamber for Sewerage Network Zone 1 | 2026-12-01 → 2026-12-08 (+7d) | 2026-12-16 → 2026-12-23 (+7d) |  | 76.8d → 69.8d |
| MOD-SWN-PW-1125 | Backfilling Valve Chamber for Sewerage Network Zone 1 | 2026-12-16 → 2026-12-23 (+7d) | 2026-12-31 → 2027-01-07 (+7d) |  | 76.8d → 69.8d |
| 2 | **Water Drain Chambers Construction** |  | 2026-12-29 → 2027-01-05 (+7d) |  |  |
| MOD-SWN-PW-1175 | Excavation Water Drain Chamber for Sewerage Network Zone 1 |  | 2026-11-12 → 2026-11-19 (+7d) | 75% → 80% | 73.7d → 68d |
| MOD-SWN-PW-1185 | Lean Concrete / Bedding Water Drain Chamber for Sewerage Network Zone 1 |  | 2026-11-18 → 2026-11-25 (+7d) | 70% → 77% | 73.7d → 68d |
| MOD-SWN-VF-174 | Water Drain Chambers Construction Water Drain Chamber for Sewerage Network Zone 1 |  | 2026-12-08 → 2026-12-15 (+7d) | 65% → 70% | 60.35d → 54.65d |
| MOD-SWN-PW-1195 | Test Water Drain Chamber for Sewerage Network Zone 1 |  | 2026-12-14 → 2026-12-21 (+7d) |  | 79.15d → 72.15d |
| MOD-SWN-PW-1165 | Backfilling Water Drain Chamber for Sewerage Network Zone 1 | 2026-12-14 → 2026-12-21 (+7d) | 2026-12-29 → 2027-01-05 (+7d) |  | 79.15d → 72.15d |
| 3 | **Discharge Chambers Construction** |  | 2027-01-15 → 2027-01-21 (+6d) |  |  |
| MOD-SWN-PW-1215 | Excavation Discharge Chamber for Sewerage Network Zone 1 |  | 2026-11-13 → 2026-11-18 (+5d) |  | 75.1d → 73.6d |
| MOD-SWN-PW-1225 | Lean Concrete / Bedding Discharge Chamber for Sewerage Network Zone 1 |  | 2026-11-23 → 2026-11-26 (+3d) |  | 75.1d → 73.6d |
| MOD-SWN-VF-184 | Discharge Chambers Construction Discharge Chamber for Sewerage Network Zone 1 |  | 2026-12-16 → 2026-12-22 (+6d) |  | 60.35d → 54.65d |
| MOD-SWN-PW-1235 | Test Discharge Chamber for Sewerage Network Zone 1 | 2026-12-16 → 2026-12-22 (+6d) | 2026-12-31 → 2027-01-06 (+6d) |  | 62.35d → 56.65d |
| MOD-SWN-PW-1205 | Backfilling Discharge Chamber for Sewerage Network Zone 1 | 2026-12-31 → 2027-01-06 (+6d) | 2027-01-15 → 2027-01-21 (+6d) |  | 62.35d → 56.65d |
| 4 | **Flow Meter Chambers Construction** |  | 2027-01-17 → 2027-01-23 (+6d) |  |  |
| MOD-SWN-PW-1255 | Excavation Flow Meter Chamber for Sewerage Network Zone 1 |  | 2026-11-14 → 2026-11-21 (+7d) |  | 83.53d → 76.53d |
| MOD-SWN-PW-1265 | Lean Concrete / Bedding Flow Meter Chamber for Sewerage Network Zone 1 |  | 2026-11-23 → 2026-11-30 (+7d) |  | 83.53d → 76.53d |
| MOD-SWN-VF-194 | Flow Meter Chambers Construction Flow Meter Chamber for Sewerage Network Zone 1 |  | 2026-12-18 → 2026-12-24 (+6d) |  | 60.35d → 54.65d |
| MOD-SWN-PW-1275 | Test Flow Meter Chamber for Sewerage Network Zone 1 | 2026-12-18 → 2026-12-24 (+6d) | 2027-01-02 → 2027-01-08 (+6d) |  | 60.35d → 54.65d |
| MOD-SWN-PW-1245 | Backfilling Flow Meter Chamber for Sewerage Network Zone 1 | 2027-01-02 → 2027-01-08 (+6d) | 2027-01-17 → 2027-01-23 (+6d) |  | 60.35d → 54.65d |
| 4 | **Manholes** |  | 2026-11-28 → 2026-12-05 (+7d) |  |  |
| 1 | **1200mm GRP Manholes with Backdrop** |  | 2026-11-28 → 2026-12-05 (+7d) |  |  |
| MOD-SWN-PW-1295 | Excavation 1.2m GRP for Sewerage Network Zone 1 |  | 2026-11-07 → 2026-11-14 (+7d) |  | 110.57d → 103.57d |
| MOD-SWN-PW-1305 | Lean Concrete / Bedding 1.2m GRP for Sewerage Network Zone 1 |  | 2026-11-07 → 2026-11-14 (+7d) |  | 110.57d → 103.57d |
| MOD-SWN-MH-105 | 1200mm GRP Manholes with Backdrop 1.2m GRP for Sewerage Network Zone 1 |  | 2026-11-08 → 2026-11-15 (+7d) |  | 110.57d → 103.57d |
| MOD-SWN-PW-1285 | Backfilling 1.2m GRP for Sewerage Network Zone 1 |  | 2026-11-28 → 2026-12-05 (+7d) |  | 110.57d → 103.57d |
| MOD-SWN-PW-1315 | Test 1.2m GRP for Sewerage Network Zone 1 | 2026-11-08 → 2026-11-15 (+7d) | 2026-11-13 → 2026-11-20 (+7d) |  | 110.57d → 103.57d |
| 2 | **1500mm GRP Manholes (Standard & Backdrop)** |  | 2026-11-28 → 2026-12-05 (+7d) |  |  |
| MOD-SWN-PW-1335 | Excavation 1.5m GRP for Sewerage Network Zone 1 |  | 2026-11-07 → 2026-11-14 (+7d) |  | 110.57d → 103.57d |
| MOD-SWN-PW-1345 | Lean Concrete / Bedding 1.5m GRP for Sewerage Network Zone 1 |  | 2026-11-07 → 2026-11-14 (+7d) |  | 110.57d → 103.57d |
| MOD-SWN-MH-115 | 1500mm GRP Manholes (Standard & Backdrop) 1.5m GRP for Sewerage Network Zone 1 |  | 2026-11-08 → 2026-11-15 (+7d) |  | 110.57d → 103.57d |
| MOD-SWN-PW-1325 | Backfilling 1.5m GRP for Sewerage Network Zone 1 |  | 2026-11-28 → 2026-12-05 (+7d) |  | 110.57d → 103.57d |
| MOD-SWN-PW-1355 | Test 1.5m GRP for Sewerage Network Zone 1 | 2026-11-08 → 2026-11-15 (+7d) | 2026-11-13 → 2026-11-20 (+7d) |  | 110.57d → 103.57d |
| 3 | **1800mm GRP Manholes (Standard & Backdrop)** |  | 2026-11-27 → 2026-12-04 (+7d) |  |  |
| MOD-SWN-PW-1375 | Excavation 1.8m GRP for Sewerage Network Zone 1 |  | 2026-11-07 → 2026-11-14 (+7d) |  | 110.57d → 103.57d |
| MOD-SWN-PW-1385 | Lean Concrete / Bedding 1.8m GRP for Sewerage Network Zone 1 |  | 2026-11-07 → 2026-11-14 (+7d) |  | 110.57d → 103.57d |
| MOD-SWN-MH-125 | 1800mm GRP Manholes (Standard & Backdrop) 1.8m GRP for Sewerage Network Zone 1 |  | 2026-11-08 → 2026-11-15 (+7d) |  | 110.57d → 103.57d |
| MOD-SWN-PW-1365 | Backfilling 1.8m GRP for Sewerage Network Zone 1 |  | 2026-11-27 → 2026-12-04 (+7d) |  | 110.77d → 103.77d |
| MOD-SWN-PW-1395 | Test 1.8m GRP for Sewerage Network Zone 1 | 2026-11-08 → 2026-11-15 (+7d) | 2026-11-13 → 2026-11-20 (+7d) |  | 110.77d → 103.77d |
| 4 | **2000mm GRP Manholes (Standard & Backdrop)** |  | 2026-11-28 → 2026-12-05 (+7d) |  |  |
| MOD-SWN-PW-1415 | Excavation 2m GRP for Sewerage Network Zone 1 |  | 2026-11-07 → 2026-11-14 (+7d) |  | 110.57d → 103.57d |
| MOD-SWN-PW-1425 | Lean Concrete / Bedding 2m GRP for Sewerage Network Zone 1 |  | 2026-11-07 → 2026-11-14 (+7d) |  | 110.57d → 103.57d |
| MOD-SWN-MH-135 | 2000mm GRP Manholes (Standard & Backdrop) 2m GRP for Sewerage Network Zone 1 |  | 2026-11-08 → 2026-11-15 (+7d) |  | 110.57d → 103.57d |
| MOD-SWN-PW-1405 | Backfilling 2m GRP for Sewerage Network Zone 1 |  | 2026-11-28 → 2026-12-05 (+7d) |  | 110.57d → 103.57d |
| MOD-SWN-PW-1435 | Test 2m GRP for Sewerage Network Zone 1 | 2026-11-08 → 2026-11-15 (+7d) | 2026-11-13 → 2026-11-20 (+7d) |  | 110.57d → 103.57d |
| 5 | **Pumping Stations** |  | 2027-04-18 → 2027-04-25 (+7d) |  |  |
| 1 | **Sewage Pumps and MCC System** | 2026-12-03 → 2026-12-10 (+7d) | 2027-01-24 → 2027-01-31 (+7d) |  |  |

| ID | Task | Start | Finish | Total float |
| --- | --- | --- | --- | --- |
| MOD-SWN-PS-002 | Sewage pumps incl. MCC, control panel, flow meters, transducers, switches, GRP piping, testing & installation – PS1 for | 2026-12-03 → 2026-12-10 (+7d) | 2026-12-16 → 2026-12-23 (+7d) | 27.35d → 21.35d |
| MOD-SWN-PS-003 | Sewage pumps (2x86 l/s, 1x325 l/s) incl. MCC – PS1 for Sewerage Network Zone 1 | 2026-12-16 → 2026-12-23 (+7d) | 2026-12-30 → 2027-01-06 (+7d) | 27.35d → 21.35d |
| MOD-SWN-PS-004 | Sewage pumps (2x55 l/s) incl. MCC – PS2 for Sewerage Network Zone 1 | 2026-12-30 → 2027-01-06 (+7d) | 2027-01-24 → 2027-01-31 (+7d) | 27.35d → 21.35d |
| 2 | **Odor Control System** | 2027-01-04 → 2027-01-11 (+7d) | 2027-02-02 → 2027-02-11 (+9d) |  |
| MOD-SWN-PS-0081 | Odor control system – All stations (PS1) for Sewerage Network Zone 1 | 2027-01-04 → 2027-01-11 (+7d) | 2027-01-16 → 2027-01-23 (+7d) | -29.21d → -35.21d |
| MOD-SWN-PS-0082 | Odor control system – All stations (PS2) for Sewerage Network Zone 1 | 2027-01-16 → 2027-01-23 (+7d) | 2027-02-02 → 2027-02-11 (+9d) | 18.79d → 12.79d |
| 3 | **In-Line Booster Stations** | 2027-01-16 → 2027-01-23 (+7d) | 2027-04-18 → 2027-04-25 (+7d) |  |
| MOD-SWN-PS-010 | In-Line Booster Stations - Civil Works for Sewerage Network Zone 1 | 2027-01-16 → 2027-01-23 (+7d) | 2027-02-11 → 2027-02-24 (+13d) | -29.21d → -35.21d |
| MOD-SWN-PS-1164 | In-Line Booster Stations - Mechanical Works for Sewerage Network Zone 1 | 2027-02-11 → 2027-02-24 (+13d) | 2027-03-24 → 2027-03-31 (+7d) | -29.21d → -35.21d |
| MOD-SWN-PS-1174 | In-Line Booster Stations - Electrical Works for Sewerage Network Zone 1 | 2027-03-24 → 2027-03-31 (+7d) | 2027-04-18 → 2027-04-25 (+7d) | -29.21d → -35.21d |
| 7 | **Engine/Motor Control Center Buildings** | 2026-11-07 → 2026-11-14 (+7d) | 2026-11-15 → 2026-11-22 (+7d) |  |
| MOD-SWN-PS-038 | MCC Building – PS1 for Sewerage Network Zone 1 | 2026-11-07 → 2026-11-14 (+7d) | 2026-11-07 → 2026-11-14 (+7d) | 31.6d → 25.6d |
| MOD-SWN-PS-039 | MCC Building – PS2 for Sewerage Network Zone 1 | 2026-11-08 → 2026-11-15 (+7d) | 2026-11-15 → 2026-11-22 (+7d) | 55.6d → 49.6d |
| 4 | **Valves and Fittings (General Supply & Installation)** | 2026-12-03 → 2026-12-10 (+7d) | 2026-12-09 → 2026-12-16 (+7d) |  |
| MOD-SWN-PS-012 | Valves, fittings & accessories – PS1 for Sewerage Network Zone 1 | 2026-12-03 → 2026-12-10 (+7d) | 2026-12-06 → 2026-12-13 (+7d) | 66.35d → 60.35d |
| MOD-SWN-PS-013 | 35mm raked bar SS 316 mesh – PS1 for Sewerage Network Zone 1 | 2026-12-06 → 2026-12-13 (+7d) | 2026-12-07 → 2026-12-14 (+7d) | 66.35d → 60.35d |
| MOD-SWN-PS-014 | Valves, fittings, flow meters – PS2 for Sewerage Network Zone 1 | 2026-12-07 → 2026-12-14 (+7d) | 2026-12-09 → 2026-12-16 (+7d) | 66.35d → 60.35d |
| 5 | **Tank with Canopy** | 2027-02-11 → 2027-02-24 (+13d) | 2027-03-15 → 2027-03-22 (+7d) |  |
| MOD-SWN-PS-019 | Tank with canopy (per specs/drawings) - PS1 for Sewerage Network Zone 1 | 2027-02-11 → 2027-02-24 (+13d) | 2027-03-15 → 2027-03-22 (+7d) | -0.21d → -6.21d |
| 6 | **Pump Well and Valve Chambers** | 2026-11-08 → 2026-11-15 (+7d) | 2027-01-18 → 2027-01-25 (+7d) |  |
| MOD-SWN-PS-022 | Pump well & valve chamber structure – PS1 (2 wells, 12m deep) for Sewerage Network Zone 1 | 2026-11-08 → 2026-11-15 (+7d) | 2026-11-22 → 2026-11-29 (+7d) | 31.6d → 25.6d |
| MOD-SWN-PS-023 | Concrete wall (5x5x1m) inside PS1 well for Sewerage Network Zone 1 | 2026-11-23 → 2026-11-30 (+7d) | 2026-11-30 → 2026-12-07 (+7d) | 31.6d → 25.6d |
| MOD-SWN-PS-027 | Pump well & valve chamber structure – PS2 (2 wells, 3m each, 9m depth) for Sewerage Network Zone 1 | 2026-11-23 → 2026-11-30 (+7d) | 2026-12-08 → 2026-12-15 (+7d) | 35.6d → 29.6d |
| MOD-SWN-PS-024 | 35 mm raked bar SS 316 network chamber PS1 for Sewerage Network Zone 1 | 2026-12-01 → 2026-12-08 (+7d) | 2026-12-01 → 2026-12-08 (+7d) | 31.6d → 25.6d |
| MOD-SWN-PS-025 | Valve chamber – PS1 for Sewerage Network Zone 1 | 2026-12-02 → 2026-12-09 (+7d) | 2026-12-08 → 2026-12-15 (+7d) | 31.6d → 25.6d |
| MOD-SWN-PS-026 | Flow meter chamber – PS1 for Sewerage Network Zone 1 | 2026-12-09 → 2026-12-16 (+7d) | 2026-12-13 → 2026-12-20 (+7d) | 31.6d → 25.6d |
| MOD-SWN-PS-028 | Valve chamber – PS2 for Sewerage Network Zone 1 | 2026-12-14 → 2026-12-21 (+7d) | 2026-12-31 → 2027-01-07 (+7d) | 31.6d → 25.6d |
| MOD-SWN-PS-029 | Flow meter chamber – PS2 for Sewerage Network Zone 1 | 2027-01-02 → 2027-01-09 (+7d) | 2027-01-18 → 2027-01-25 (+7d) | 31.6d → 25.6d |
| 8 | **Odor Control System Base/Plinth** | 2026-11-26 → 2026-12-03 (+7d) | 2026-12-02 → 2026-12-09 (+7d) |  |
| MOD-SWN-PS-043 | Concrete plinth below odor control – All PSs for Sewerage Network Zone 1 | 2026-11-26 → 2026-12-03 (+7d) | 2026-12-02 → 2026-12-09 (+7d) | -1.4d → -7.4d |
| 10 | **Lighting Works** |  | 2026-12-03 → 2026-12-10 (+7d) |  |
| MOD-SWN-PS-052 | 250W Flood Light installation – Each PS for Sewerage Network Zone 1 |  | 2026-12-03 → 2026-12-10 (+7d) | 71d → 65d |
| 11 | **Duct Works** | 2026-11-23 → 2026-11-30 (+7d) | 2026-11-30 → 2026-12-07 (+7d) |  |
| MOD-SWN-PS-054 | uPVC duct Track 1 – All PSs for Sewerage Network Zone 1 | 2026-11-23 → 2026-11-30 (+7d) | 2026-11-23 → 2026-11-30 (+7d) | 70.6d → 64.6d |
| MOD-SWN-PS-055 | uPVC duct Track 2 – All PSs for Sewerage Network Zone 1 | 2026-11-24 → 2026-12-01 (+7d) | 2026-11-25 → 2026-12-02 (+7d) | 70.6d → 64.6d |
| MOD-SWN-PS-056 | uPVC duct Track 8 – All PSs for Sewerage Network Zone 1 | 2026-11-26 → 2026-12-03 (+7d) | 2026-11-30 → 2026-12-07 (+7d) | 70.6d → 64.6d |
| 12 | **Grounding Works** | 2026-12-01 → 2026-12-08 (+7d) | 2026-12-03 → 2026-12-10 (+7d) |  |
| MOD-SWN-PS-058 | Grounding pit – Each PS for Sewerage Network Zone 1 | 2026-12-01 → 2026-12-08 (+7d) | 2026-12-01 → 2026-12-08 (+7d) | 70.6d → 64.6d |
| MOD-SWN-PS-059 | 600x600 Cable pull pit – All PSs for Sewerage Network Zone 1 | 2026-12-02 → 2026-12-09 (+7d) | 2026-12-03 → 2026-12-10 (+7d) | 70.6d → 64.6d |
| 13 | **Landscaping / Interlocking Tiles** | 2026-11-07 → 2026-11-14 (+7d) | 2026-11-30 → 2026-12-07 (+7d) |  |
| MOD-SWN-PS-061 | Building perimeter interlock tiles for Sewerage Network Zone 1 | 2026-11-07 → 2026-11-14 (+7d) | 2026-11-25 → 2026-12-02 (+7d) | -1.4d → -7.4d |
| MOD-SWN-PS-062 | Entrance road paving tiles for Sewerage Network Zone 1 | 2026-11-26 → 2026-12-03 (+7d) | 2026-11-30 → 2026-12-07 (+7d) | 73.6d → 67.6d |
| 14 | **Pumping Station Internal Drainage Network** | 2026-11-07 → 2026-11-14 (+7d) | 2026-11-14 → 2026-11-21 (+7d) |  |
| MOD-SWN-PS-064 | Internal surface drainage channels for Sewerage Network Zone 1 | 2026-11-07 → 2026-11-14 (+7d) | 2026-11-14 → 2026-11-21 (+7d) | 87.6d → 81.6d |
| 12 | **Rainwater Drainage Network Zone 1** |  | 2026-12-07 → 2026-12-14 (+7d) |  |
| 1 | **Pipe Laying Works** |  | 2026-11-15 → 2026-11-22 (+7d) |  |
| 2 | **Supply & Installation of uPVC Pipes (250–300mm dia)** |  | 2026-11-10 → 2026-11-17 (+7d) |  |
| MOD-RWN-PL-913 | Excavation to required depth UPVC for Rainwater Drainage Network Zone 1 |  | 2026-11-08 → 2026-11-15 (+7d) | -111.25d → -118.25d |
| MOD-RWN-PL-923 | Lean Concrete / Bedding UPVC for Rainwater Drainage Network Zone 1 |  | 2026-11-08 → 2026-11-15 (+7d) | -111.25d → -118.25d |
| MOD-RWN-PL-933 | Laying of uPVC pipe UPVC for Rainwater Drainage Network Zone 1 |  | 2026-11-09 → 2026-11-16 (+7d) | -111.25d → -118.25d |
| MOD-RWN-PL-953 | Test (Pressure-slope) UPVC for Rainwater Drainage Network Zone 1 |  | 2026-11-09 → 2026-11-16 (+7d) | -111.25d → -118.25d |
| MOD-RWN-PL-943 | Coating / Wrapping UPVC for Rainwater Drainage Network Zone 1 |  | 2026-11-09 → 2026-11-16 (+7d) | -105.81d → -112.81d |
| MOD-RWN-PL-963 | Backfilling & Warning Tape UPVC for Rainwater Drainage Network Zone 1 |  | 2026-11-10 → 2026-11-17 (+7d) | -106.81d → -113.81d |
| 4 | **uPVC Connection Pipes (150mm dia)** |  | 2026-11-15 → 2026-11-22 (+7d) |  |
| MOD-RWN-PL-1043 | Lay & connect UPVC Con. for Rainwater Drainage Network Zone 1 |  | 2026-11-09 → 2026-11-16 (+7d) | -111.25d → -118.25d |
| MOD-RWN-PL-1053 | Test (Pressure-slope) UPVC Con. for Rainwater Drainage Network Zone 1 |  | 2026-11-10 → 2026-11-17 (+7d) | -111.25d → -118.25d |
| MOD-RWN-PL-1083 | Coating / Wrapping UPVC Con. for Rainwater Drainage Network Zone 1 |  | 2026-11-14 → 2026-11-21 (+7d) | -111.25d → -118.25d |
| MOD-RWN-PL-1063 | Backfilling & compaction UPVC Con. for Rainwater Drainage Network Zone 1 |  | 2026-11-15 → 2026-11-22 (+7d) | -111.25d → -118.25d |
| 5 | **Precast Concrete Box Culverts** |  | 2026-12-06 → 2026-12-13 (+7d) |  |
| 1 | **Box Culverts (500x500mm to 3500x800mm)** |  | 2026-12-01 → 2026-12-08 (+7d) |  |
| MOD-RWN-PC-003 | Excavation to required depth Box culvert for Rainwater Drainage Network Zone 1 |  | 2026-11-07 → 2026-11-14 (+7d) | -113.21d → -119.21d |
| MOD-RWN-PC-004 | Dewatering and trench shoring Box culvert for Rainwater Drainage Network Zone 1 |  | 2026-11-08 → 2026-11-15 (+7d) | -113.21d → -119.21d |
| MOD-RWN-PC-005 | Bedding preparation (gravel/lean concrete) Box culvert for Rainwater Drainage Network Zone 1 |  | 2026-11-09 → 2026-11-16 (+7d) | -113.21d → -119.21d |
| MOD-RWN-PC-006 | Installation of box culvert units Box culvert for Rainwater Drainage Network Zone 1 |  | 2026-11-14 → 2026-11-21 (+7d) | -113.21d → -119.21d |
| MOD-RWN-PC-007 | Alignment and joint sealing Box culvert for Rainwater Drainage Network Zone 1 |  | 2026-11-16 → 2026-11-23 (+7d) | -108.31d → -114.31d |
| MOD-RWN-PC-008 | Construct headwalls/wing walls (if needed) Box culvert for Rainwater Drainage Network Zone 1 | 2026-11-16 → 2026-11-23 (+7d) | 2026-11-22 → 2026-11-29 (+7d) | -108.31d → -114.31d |
| MOD-RWN-PC-009 | Backfilling and compaction Box culvert for Rainwater Drainage Network Zone 1 | 2026-11-22 → 2026-11-29 (+7d) | 2026-11-28 → 2026-12-05 (+7d) | -108.31d → -114.31d |
| MOD-RWN-PC-010 | Surface finishing Box culvert for Rainwater Drainage Network Zone 1 | 2026-11-28 → 2026-12-05 (+7d) | 2026-12-01 → 2026-12-08 (+7d) | -108.31d → -114.31d |
| 2 | **Tube Culverts at Road Intersections** |  | 2026-11-25 → 2026-12-02 (+7d) |  |
| MOD-RWN-PC-014 | Pipe bedding and twin pipe alignment Tube culvert for Rainwater Drainage Network Zone 1 |  | 2026-11-10 → 2026-11-17 (+7d) | -103.81d → -109.81d |

| ID | Task | Start | Finish | Total float |
| --- | --- | --- | --- | --- |
| MOD-RWN-PC-015 | Pipe laying and jointing Tube culvert for Rainwater Drainage Network Zone 1 |  | 2026-11-16 → 2026-11-23 (+7d) | -103.81d → -109.81d |
| MOD-RWN-PC-016 | Backfilling and road reinstatement Tube culvert for Rainwater Drainage Network Zone 1 | 2026-11-16 → 2026-11-23 (+7d) | 2026-11-25 → 2026-12-02 (+7d) | -103.81d → -109.81d |
| 3 | **Box Culverts at Road Intersections** |  | 2026-12-06 → 2026-12-13 (+7d) |  |
| MOD-RWN-PC-019 | Deep trench excavation with shoring for Rainwater Drainage Network Zone 1 |  | 2026-11-07 → 2026-11-14 (+7d) | -112.74d → -118.74d |
| MOD-RWN-PC-020 | Place bedding material for Rainwater Drainage Network Zone 1 |  | 2026-11-08 → 2026-11-15 (+7d) | -112.74d → -118.74d |
| MOD-RWN-PC-021 | Install precast box culvert for Rainwater Drainage Network Zone 1 | 2026-11-08 → 2026-11-15 (+7d) | 2026-11-12 → 2026-11-19 (+7d) | -112.74d → -118.74d |
| MOD-RWN-PC-022 | Construct connection chambers (if needed) for Rainwater Drainage Network Zone 1 | 2026-11-12 → 2026-11-19 (+7d) | 2026-11-14 → 2026-11-21 (+7d) | -112.74d → -118.74d |
| MOD-RWN-PC-023 | Joint treatment and testing for Rainwater Drainage Network Zone 1 | 2026-11-14 → 2026-11-21 (+7d) | 2026-11-25 → 2026-12-02 (+7d) | -112.74d → -118.74d |
| MOD-RWN-PC-024 | Backfilling and surface reinstatement for Rainwater Drainage Network Zone 1 | 2026-11-25 → 2026-12-02 (+7d) | 2026-12-06 → 2026-12-13 (+7d) | -112.74d → -118.74d |
| 4 | **Manholes** |  | 2026-12-07 → 2026-12-14 (+7d) |  |
| 1 | **Circular GRP Manholes (1200–1800mm dia)** |  | 2026-11-28 → 2026-12-05 (+7d) |  |
| MOD-RWN-MH-003 | Dewatering and safety barriers Circular Manhole for Rainwater Drainage Network Zone 1 |  | 2026-11-12 → 2026-11-19 (+7d) | -105.16d → -111.16d |
| MOD-RWN-MH-004 | Concrete base construction Circular Manhole for Rainwater Drainage Network Zone 1 |  | 2026-11-14 → 2026-11-21 (+7d) | -105.16d → -111.16d |
| MOD-RWN-MH-005 | Install GRP manhole shaft sections Circular Manhole for Rainwater Drainage Network Zone 1 |  | 2026-11-19 → 2026-11-26 (+7d) | -105.16d → -111.16d |
| MOD-RWN-MH-006 | Place slab and cover frame Circular Manhole for Rainwater Drainage Network Zone 1 |  | 2026-11-22 → 2026-11-29 (+7d) | -105.16d → -111.16d |
| MOD-RWN-MH-007 | Waterproofing Circular Manhole for Rainwater Drainage Network Zone 1 |  | 2026-11-25 → 2026-12-02 (+7d) | -105.16d → -111.16d |
| MOD-RWN-MH-008 | Backfilling and compaction Circular Manhole for Rainwater Drainage Network Zone 1 |  | 2026-11-28 → 2026-12-05 (+7d) | -105.16d → -111.16d |
| 3 | **Concrete Manholes for 1500x1500 Box Pipes** |  | 2026-11-29 → 2026-12-06 (+7d) |  |
| MOD-RWN-MH-019 | Base slab and wall shuttering Concrete Manhole 1.5x1.5 for Rainwater Drainage Network Zone 1 |  | 2026-11-12 → 2026-11-19 (+7d) | -106.96d → -112.96d |
| MOD-RWN-MH-020 | Wall reinforcement and casting Concrete Manhole 1.5x1.5 for Rainwater Drainage Network Zone 1 |  | 2026-11-15 → 2026-11-22 (+7d) | -106.96d → -112.96d |
| MOD-RWN-MH-021 | Roof slab with openings Concrete Manhole 1.5x1.5 for Rainwater Drainage Network Zone 1 |  | 2026-11-16 → 2026-11-23 (+7d) | -106.96d → -112.96d |
| MOD-RWN-MH-022 | Masonry/benching works inside Concrete Manhole 1.5x1.5 for Rainwater Drainage Network Zone 1 |  | 2026-11-18 → 2026-11-25 (+7d) | -106.96d → -112.96d |
| MOD-RWN-MH-023 | Install cover and frame Concrete Manhole 1.5x1.5 for Rainwater Drainage Network Zone 1 |  | 2026-11-23 → 2026-11-30 (+7d) | -106.96d → -112.96d |
| MOD-RWN-MH-024 | Backfill in layers Concrete Manhole 1.5x1.5 for Rainwater Drainage Network Zone 1 | 2026-11-23 → 2026-11-30 (+7d) | 2026-11-29 → 2026-12-06 (+7d) | -106.96d → -112.96d |
| 2 | **Concrete Manholes for 1000x1000 Box Pipes** |  | 2026-12-07 → 2026-12-14 (+7d) |  |
| MOD-RWN-MH-010 | Excavation Concrete Manhole 1x1 for Rainwater Drainage Network Zone 1 |  | 2026-11-11 → 2026-11-18 (+7d) | -113.21d → -119.21d |
| MOD-RWN-MH-011 | Base slab and wall shuttering Concrete Manhole 1x1 for Rainwater Drainage Network Zone 1 |  | 2026-11-14 → 2026-11-21 (+7d) | -113.21d → -119.21d |
| MOD-RWN-MH-012 | Wall reinforcement and casting Concrete Manhole 1x1 for Rainwater Drainage Network Zone 1 |  | 2026-11-17 → 2026-11-24 (+7d) | -113.21d → -119.21d |
| MOD-RWN-MH-013 | Roof slab with openings Concrete Manhole 1x1 for Rainwater Drainage Network Zone 1 |  | 2026-11-22 → 2026-11-29 (+7d) | -113.21d → -119.21d |
| MOD-RWN-MH-014 | Masonry/benching works inside Concrete Manhole 1x1 for Rainwater Drainage Network Zone 1 |  | 2026-11-29 → 2026-12-06 (+7d) | -113.21d → -119.21d |
| MOD-RWN-MH-015 | Install cover and frame Concrete Manhole 1x1 for Rainwater Drainage Network Zone 1 | 2026-11-29 → 2026-12-06 (+7d) | 2026-12-03 → 2026-12-10 (+7d) | -113.21d → -119.21d |
| MOD-RWN-MH-016 | Backfill in layers Concrete Manhole 1x1 for Rainwater Drainage Network Zone 1 | 2026-12-03 → 2026-12-10 (+7d) | 2026-12-07 → 2026-12-14 (+7d) | -113.21d → -119.21d |
| 2 | **Chambers and Catch Basins** |  | 2026-11-14 → 2026-11-21 (+7d) |  |
| 2 | **Rainwater Catch Basins** |  | 2026-11-14 → 2026-11-21 (+7d) |  |
| MOD-RWN-CC-012 | Backfill and surface finish Catch Basin for Rainwater Drainage Network Zone 1 |  | 2026-11-14 → 2026-11-21 (+7d) | -93.37d → -99.37d |
| 3 | **Gully Outfalls to Swales** |  | 2026-11-17 → 2026-11-24 (+7d) |  |
| 1 | **Gully Outfalls to Swales** |  | 2026-11-15 → 2026-11-22 (+7d) |  |
| MOD-RWN-GO-004 | Place concrete apron or pipes Gully Outfall to Swales for Rainwater Drainage Network Zone 1 |  | 2026-11-14 → 2026-11-21 (+7d) | -94.64d → -100.64d |
| MOD-RWN-GO-005 | Provide slope protection (riprap) Gully Outfall to Swales for Rainwater Drainage Network Zone 1 |  | 2026-11-14 → 2026-11-21 (+7d) | -94.64d → -100.64d |
| MOD-RWN-GO-006 | Compact and shape terrain Gully Outfall to Swales for Rainwater Drainage Network Zone 1 |  | 2026-11-15 → 2026-11-22 (+7d) | -94.64d → -100.64d |
| 2 | **Riprap Works & Protection** |  | 2026-11-17 → 2026-11-24 (+7d) |  |
| MOD-RWN-GO-008 | Lay filter fabric/membrane for Rainwater Drainage Network Zone 1 |  | 2026-11-14 → 2026-11-21 (+7d) | -97.03d → -103.03d |
| MOD-RWN-GO-009 | Place riprap/stone layer for Rainwater Drainage Network Zone 1 |  | 2026-11-16 → 2026-11-23 (+7d) | -97.03d → -103.03d |
| MOD-RWN-GO-010 | Compact edges for Rainwater Drainage Network Zone 1 |  | 2026-11-17 → 2026-11-24 (+7d) | -97.03d → -103.03d |
| 6 | **Backfilling & Bedding** |  | 2026-11-23 → 2026-11-30 (+7d) |  |
| 1 | **Backfilling Materials (Type A – 201–700mm Pipes)** |  | 2026-11-17 → 2026-11-24 (+7d) |  |
| MOD-RWN-BB-002 | Place granular bedding under pipe for Rainwater Drainage Network Zone 1 |  | 2026-11-07 → 2026-11-14 (+7d) | -107.71d → -112.21d |
| MOD-RWN-BB-003 | Lay and align pipe for Rainwater Drainage Network Zone 1 |  | 2026-11-08 → 2026-11-15 (+7d) | -96.45d → -102.45d |
| MOD-RWN-BB-004 | Backfill up to spring line for Rainwater Drainage Network Zone 1 |  | 2026-11-08 → 2026-11-15 (+7d) | -96.45d → -102.45d |
| MOD-RWN-BB-005 | Compact layer-wise for Rainwater Drainage Network Zone 1 |  | 2026-11-08 → 2026-11-15 (+7d) | -96.45d → -102.45d |
| MOD-RWN-BB-006 | Final fill to subgrade level for Rainwater Drainage Network Zone 1 | 2026-11-10 → 2026-11-17 (+7d) | 2026-11-17 → 2026-11-24 (+7d) | -96.45d → -102.45d |
| 2 | **Gravel Bedding & Filter Cloth for uPVC Drain Pipes** |  | 2026-11-23 → 2026-11-30 (+7d) |  |
| MOD-RWN-BB-008 | Line trench with filter cloth for Rainwater Drainage Network Zone 1 |  | 2026-11-07 → 2026-11-14 (+7d) | -102d → -108d |
| MOD-RWN-BB-009 | Place and compact gravel bedding for Rainwater Drainage Network Zone 1 |  | 2026-11-07 → 2026-11-14 (+7d) | -102d → -108d |
| MOD-RWN-BB-010 | Lay pipe within gravel zone for Rainwater Drainage Network Zone 1 |  | 2026-11-07 → 2026-11-14 (+7d) | -102d → -108d |
| MOD-RWN-BB-011 | Wrap filter cloth above pipe for Rainwater Drainage Network Zone 1 |  | 2026-11-09 → 2026-11-16 (+7d) | -102d → -108d |
| MOD-RWN-BB-012 | Final fill and trench restoration for Rainwater Drainage Network Zone 1 | 2026-11-09 → 2026-11-16 (+7d) | 2026-11-23 → 2026-11-30 (+7d) | -102d → -108d |
| 13 | **Potable Water Network Zone 1** |  | 2026-12-24 → 2026-12-31 (+7d) |  |
| 1 | **Pipe Installation Works** |  | 2026-11-08 → 2026-11-15 (+7d) |  |
| MOD-PWN-PI-383 | Lean Concrete / Pipe Bedding Preparation for Potable Water Network Zone 1 |  | 2026-11-07 → 2026-11-14 (+7d) | 52.98d → 45.98d |
| MOD-PWN-PI-393 | HDPE Pipe Laying (200 mm to 710 mm) for Potable Water Network Zone 1 |  | 2026-11-07 → 2026-11-14 (+7d) | 52.98d → 45.98d |
| MOD-PWN-PI-413 | Coating / Wrapping for Potable Water Network Zone 1 |  | 2026-11-08 → 2026-11-15 (+7d) | 52.98d → 45.98d |
| MOD-PWN-PI-403 | Test (Pressure-slope) for Potable Water Network Zone 1 |  | 2026-11-07 → 2026-11-14 (+7d) | 52.98d → 45.98d |
| MOD-PWN-PI-423 | Backfilling & Warrning Tape for Potable Water Network Zone 1 |  | 2026-11-08 → 2026-11-15 (+7d) | 52.98d → 45.98d |
| 2 | **Valve Installation & Chambers** |  | 2026-11-09 → 2026-11-16 (+7d) |  |
| MOD-PWN-VC-004 | Valve Chamber Excavation for Potable Water Network Zone 1 |  | 2026-11-07 → 2026-11-14 (+7d) | 25.7d → 19.7d |
| MOD-PWN-VC-005 | RC Slab, Walls, or Precast Chambers for Potable Water Network Zone 1 |  | 2026-11-07 → 2026-11-14 (+7d) | 44.72d → 38.72d |
| MOD-PWN-VC-001 | Gate Valves (225–710 mm) for Potable Water Network Zone 1 |  | 2026-11-07 → 2026-11-14 (+7d) | 44.6d → 38.6d |
| MOD-PWN-VC-003 | 3-exit (2 x 2.5-inch and 1 x 4-inch) dry vacuum cylinder detachable fire nozzle for Potable Water Network Zone 1 |  | 2026-11-07 → 2026-11-14 (+7d) | 44.6d → 38.6d |
| MOD-PWN-VC-002 | Butterfly Valves (355, 500, 630 mm) for Potable Water Network Zone 1 |  | 2026-11-07 → 2026-11-14 (+7d) | 44.6d → 38.6d |

| ID | Task | Start | Finish | Complete | Total float |
| --- | --- | --- | --- | --- | --- |
| MOD-PWN-VC-006 | Fixing Covers, Gratings, Frames for Potable Water Network Zone 1 |  | 2026-11-07 → 2026-11-14 (+7d) |  | 44.6d → 38.6d |
| MOD-PWN-VC-007 | Tagging & Painting for Potable Water Network Zone 1 | 2026-11-07 → 2026-11-14 (+7d) | 2026-11-09 → 2026-11-16 (+7d) |  | 44.6d → 38.6d |
| 3 | **Flow Meter Installation** |  | 2026-12-24 → 2026-12-31 (+7d) |  |  |
| MOD-PWN-FM-002 | RC or Precast Chamber Construction for Potable Water Network Zone 1 |  | 2026-11-10 → 2026-11-17 (+7d) |  | 25.7d → 19.7d |
| MOD-PWN-FM-003 | Flowmeter Installation & Pipe Integration for Potable Water Network Zone 1 |  | 2026-12-12 → 2026-12-19 (+7d) |  | 5.65d → -0.35d |
| MOD-PWN-FM-004 | Wiring/Cabling if applicable for Potable Water Network Zone 1 | 2026-12-12 → 2026-12-19 (+7d) | 2026-12-21 → 2026-12-28 (+7d) |  | 5.65d → -0.35d |
| MOD-PWN-FM-005 | Calibration & Commissioning for Potable Water Network Zone 1 | 2026-12-21 → 2026-12-28 (+7d) | 2026-12-24 → 2026-12-31 (+7d) |  | 5.65d → -0.35d |
| 4 | **Washout & Air Valve Chambers** |  | 2026-11-12 → 2026-11-19 (+7d) |  |  |
| MOD-PWN-WA-003 | Pipe Work for Potable Water Network Zone 1 |  | 2026-11-07 → 2026-11-14 (+7d) |  | 42.04d → 36.04d |
| MOD-PWN-WA-004 | Washout (Valve + Outlet) Installation for Potable Water Network Zone 1 |  | 2026-11-08 → 2026-11-15 (+7d) |  | 42.04d → 36.04d |
| MOD-PWN-WA-005 | Air Valve Rooms (Valve + Outlet) Installation for Potable Water Network Zone 1 |  | 2026-11-09 → 2026-11-16 (+7d) |  | 42.04d → 36.04d |
| MOD-PWN-WA-006 | Covers, Ladders & Tags for Potable Water Network Zone 1 |  | 2026-11-09 → 2026-11-16 (+7d) |  | 42.04d → 36.04d |
| MOD-PWN-WA-007 | Backfilling & Final Finishing for Potable Water Network Zone 1 | 2026-11-09 → 2026-11-16 (+7d) | 2026-11-12 → 2026-11-19 (+7d) |  | 42.04d → 36.04d |
| 7 | **Irrigation Network Zone 1** |  | 2026-12-09 → 2026-12-16 (+7d) |  |  |
| 1 | **Excavation, Pipe Laying & Backfilling** |  | 2026-11-07 → 2026-11-14 (+7d) |  |  |
| MOD-IRN-EB-400 | Lean Concrete / Pipe Bedding with Type B Material for Irrigation Network Zone 1 |  | 2026-11-07 → 2026-11-14 (+7d) |  | 53.86d → 46.86d |
| MOD-IRN-EB-410 | HDPE Pipe Laying (125 mm to 630 mm) for Irrigation Network Zone 1 |  | 2026-11-07 → 2026-11-14 (+7d) |  | 53.86d → 46.86d |
| MOD-IRN-EB-420 | Test (Pressure-slope) for Irrigation Network Zone 1 |  | 2026-11-07 → 2026-11-14 (+7d) |  | 53.86d → 46.86d |
| MOD-IRN-EB-430 | Coating / Wrapping for Irrigation Network Zone 1 |  | 2026-11-07 → 2026-11-14 (+7d) |  | 53.86d → 46.86d |
| MOD-IRN-EB-440 | Backfilling & Warrning Tape for Irrigation Network Zone 1 |  | 2026-11-07 → 2026-11-14 (+7d) |  | 53.86d → 46.86d |
| 2 | **Valves and Appurtenances** |  | 2026-11-09 → 2026-11-16 (+7d) |  |  |
| MOD-IRN-VA-001 | Supply & Installation of Valves (Gate Valve) for Irrigation Network Zone 1 |  | 2026-11-07 → 2026-11-14 (+7d) |  | 41.55d → 35.55d |
| MOD-IRN-VA-002 | Supply & Installation of Valves (Butterfly Valve) for Irrigation Network Zone 1 |  | 2026-11-07 → 2026-11-14 (+7d) |  | 41.55d → 35.55d |
| MOD-IRN-VA-003 | Installation of Flanges, Bolts, Collars, Nuts for Irrigation Network Zone 1 |  | 2026-11-07 → 2026-11-14 (+7d) |  | 41.55d → 35.55d |
| MOD-IRN-VA-005 | Support Brackets/Anchor Blocks for Irrigation Network Zone 1 |  | 2026-11-09 → 2026-11-16 (+7d) |  | 45.34d → 39.34d |
| MOD-IRN-VA-004 | Valve Pressure Testing for Irrigation Network Zone 1 |  | 2026-11-08 → 2026-11-15 (+7d) |  | 45.34d → 39.34d |
| 3 | **Valve Rooms** |  | 2026-11-09 → 2026-11-16 (+7d) |  |  |
| MOD-IRN-VR-002 | Blinding Concrete Valve Chamber for Irrigation Network Zone 1 |  | 2026-11-07 → 2026-11-14 (+7d) |  | 44.56d → 38.56d |
| MOD-IRN-VR-003 | RCC Base Slab & Chamber Walls Valve Chamber for Irrigation Network Zone 1 |  | 2026-11-08 → 2026-11-15 (+7d) |  | 44.56d → 38.56d |
| MOD-IRN-VR-004 | Block Wall Construction (if any) Valve Chamber for Irrigation Network Zone 1 |  | 2026-11-08 → 2026-11-15 (+7d) |  | 44.56d → 38.56d |
| MOD-IRN-VR-005 | Installation of Valve inside the Room Valve Chamber for Irrigation Network Zone 1 |  | 2026-11-09 → 2026-11-16 (+7d) |  | 44.56d → 38.56d |
| MOD-IRN-VR-006 | Fixing Frame & Cover Valve Chamber for Irrigation Network Zone 1 |  | 2026-11-09 → 2026-11-16 (+7d) |  | 44.56d → 38.56d |
| MOD-IRN-VR-007 | Backfilling and Finishing Valve Chamber for Irrigation Network Zone 1 |  | 2026-11-09 → 2026-11-16 (+7d) |  | 44.56d → 38.56d |
| 4 | **Washout Chambers** |  | 2026-11-07 → 2026-11-14 (+7d) |  |  |
| MOD-IRN-WC-005 | Manhole Frame, Cover & Ladder Fixing Washout Chamber for Irrigation Network Zone 1 |  | 2026-11-07 → 2026-11-14 (+7d) |  | 46.77d → 40.77d |
| MOD-IRN-WC-006 | Backfilling & Reinstatement Washout Chamber for Irrigation Network Zone 1 |  | 2026-11-07 → 2026-11-14 (+7d) |  | 46.77d → 40.77d |
| 6 | **Flow Meter Chambers** |  | 2026-12-09 → 2026-12-16 (+7d) |  |  |
| MOD-IRN-FC-003 | Flow Meter Installation (280, 300, 500 mm) Flow Meter Chamber for Irrigation Network Zone 1 |  | 2026-12-06 → 2026-12-13 (+7d) |  | 18.75d → 12.75d |
| MOD-IRN-FC-004 | Integration with Pipework Flow Meter Chamber for Irrigation Network Zone 1 |  | 2026-12-06 → 2026-12-13 (+7d) |  | 18.75d → 12.75d |
| MOD-IRN-FC-005 | Testing & Calibration Flow Meter Chamber for Irrigation Network Zone 1 | 2026-12-06 → 2026-12-13 (+7d) | 2026-12-08 → 2026-12-15 (+7d) |  | 18.75d → 12.75d |
| MOD-IRN-FC-006 | Cover and Access Arrangement Flow Meter Chamber for Irrigation Network Zone 1 | 2026-12-08 → 2026-12-15 (+7d) | 2026-12-09 → 2026-12-16 (+7d) |  | 18.75d → 12.75d |
| 4 | **Rainwater Collection Ponds Zone 1** |  | 2027-04-06 → 2027-04-13 (+7d) |  |  |
| 10 | **Excavation for Rainwater Drainage Pond** |  | 2027-01-09 → 2027-01-16 (+7d) |  |  |
| 11 | **Deep excavation, backfill, disposal for pond formation** |  | 2027-01-09 → 2027-01-16 (+7d) |  |  |
| MOD-RCP-ER-004 | Dewater during excavation for Rainwater Collection Ponds Zone 1 |  | 2027-01-02 → 2027-01-09 (+7d) |  | 91.9d → 85.9d |
| MOD-RCP-ER-005 | Place warning tapes for Rainwater Collection Ponds Zone 1 |  | 2027-01-03 → 2027-01-10 (+7d) | 80% → 88% | 91.9d → 85.9d |
| MOD-RCP-ER-006 | Dispose of rock/materials to approved dump area for Rainwater Collection Ponds Zone 1 |  | 2027-01-04 → 2027-01-11 (+7d) | 80% → 88% | 91.9d → 85.9d |
| MOD-RCP-ER-007 | Backfill selected areas as per design for Rainwater Collection Ponds Zone 1 | 2027-01-04 → 2027-01-11 (+7d) | 2027-01-06 → 2027-01-13 (+7d) |  | 91.9d → 85.9d |
| MOD-RCP-ER-008 | Final trimming and profiling for Rainwater Collection Ponds Zone 1 | 2027-01-06 → 2027-01-13 (+7d) | 2027-01-09 → 2027-01-16 (+7d) |  | 91.9d → 85.9d |
| 1 | **General Site Preparation** |  | 2027-01-16 → 2027-01-23 (+7d) |  |  |
| MOD-RCP-GS-0043 | Transport and disposal to approved locations - Zone 1 (2 Ponds) - P3 |  | 2027-01-16 → 2027-01-23 (+7d) |  | 65.4d → 59.4d |
| MOD-RCP-GS-0033 | Earthwork excavation (other than topsoil or rock) - Zone 1 (2 Ponds) - P3 |  | 2027-01-09 → 2027-01-16 (+7d) |  | 32.35d → 26.35d |
| 2 | **Backfilling Works** |  | 2027-01-21 → 2027-01-28 (+7d) |  |  |
| MOD-RCP-BW-001 | Select material from excavation or import approved material for Rainwater Collection Ponds Zone 1 |  | 2027-01-11 → 2027-01-18 (+7d) | 90% → 92% | 32.35d → 26.35d |
| MOD-RCP-BW-002 | Place in layers not exceeding 300mm for Rainwater Collection Ponds Zone 1 |  | 2027-01-13 → 2027-01-20 (+7d) | 90% → 92% | 80.65d → 74.65d |
| MOD-RCP-BW-003 | Compact each layer to required density for Rainwater Collection Ponds Zone 1 |  | 2027-01-16 → 2027-01-23 (+7d) | 90% → 92% | 80.65d → 74.65d |
| MOD-RCP-BW-004 | Conduct field density tests for Rainwater Collection Ponds Zone 1 |  | 2027-01-16 → 2027-01-23 (+7d) |  | 80.65d → 74.65d |
| MOD-RCP-BW-005 | Final leveling and approval for Rainwater Collection Ponds Zone 1 | 2027-01-16 → 2027-01-23 (+7d) | 2027-01-21 → 2027-01-28 (+7d) |  | 80.65d → 74.65d |
| 12 | **Geotextile & Bedding** |  | 2027-03-09 → 2027-03-21 (+12d) |  |  |
| 13 | **Installation of geotextile lining and coarse sand bedding** |  | 2027-03-09 → 2027-03-21 (+12d) |  |  |
| MOD-RCP-GB-002 | Trim subgrade to required level for Rainwater Collection Ponds Zone 1 |  | 2027-01-14 → 2027-01-21 (+7d) |  | 32.35d → 26.35d |
| MOD-RCP-GB-003 | Lay HDPE geotextile membrane over compacted soil for Rainwater Collection Ponds Zone 1 |  | 2027-01-25 → 2027-02-01 (+7d) |  | 32.35d → 26.35d |
| MOD-RCP-GB-004 | Place 500mm thick coarse sand bedding for Rainwater Collection Ponds Zone 1 |  | 2027-02-04 → 2027-02-15 (+11d) |  | 52.29d → 46.29d |
| MOD-RCP-GB-005 | Compact and level bedding for Rainwater Collection Ponds Zone 1 | 2027-02-04 → 2027-02-15 (+11d) | 2027-03-09 → 2027-03-21 (+12d) |  | 52.29d → 46.29d |
| 4 | **Culvert Structures** |  | 2027-04-06 → 2027-04-13 (+7d) |  |  |
| 8 | **Access Roads** | 2027-01-14 → 2027-01-21 (+7d) | 2027-04-06 → 2027-04-13 (+7d) |  |  |
| 9 | **Construct 3m & 5m wide roads** | 2027-01-14 → 2027-01-21 (+7d) | 2027-04-06 → 2027-04-13 (+7d) |  |  |
| MOD-RCP-AR-002 | Clear and grade road alignment for Rainwater Collection Ponds Zone 1 | 2027-01-14 → 2027-01-21 (+7d) | 2027-01-18 → 2027-01-25 (+7d) |  | 32.35d → 26.35d |
| MOD-RCP-AR-003 | Excavate and level subgrade for Rainwater Collection Ponds Zone 1 | 2027-01-18 → 2027-01-25 (+7d) | 2027-02-04 → 2027-02-15 (+11d) |  | 32.35d → 26.35d |
| MOD-RCP-AR-004 | Place and compact subbase for Rainwater Collection Ponds Zone 1 | 2027-02-04 → 2027-02-15 (+11d) | 2027-03-09 → 2027-03-21 (+12d) |  | 32.35d → 26.35d |

| ID | Task | Start | Finish | Total float |
| --- | --- | --- | --- | --- |
| MOD-RCP-AR-005 | Lay base course for Rainwater Collection Ponds Zone 1 | 2027-02-09 → 2027-02-21 (+12d) | 2027-03-24 → 2027-03-31 (+7d) | 32.35d → 26.35d |
| MOD-RCP-AR-006 | Apply asphalt (if applicable) or gravel surfacing for Rainwater Collection Ponds Zone 1 | 2027-02-23 → 2027-03-07 (+12d) | 2027-03-30 → 2027-04-06 (+7d) | 32.35d → 26.35d |
| MOD-RCP-AR-007 | Finish shoulders and install signage if required for Rainwater Collection Ponds Zone 1 | 2027-03-30 → 2027-04-06 (+7d) | 2027-04-06 → 2027-04-13 (+7d) | 32.35d → 26.35d |
| 3 | **Road Crossing Zone 1** | 2027-04-08 → 2027-04-15 (+7d) | 2027-10-19 → 2027-10-26 (+7d) |  |
| 14 | **uPVC Road Crossing Pipes** | 2027-04-08 → 2027-04-15 (+7d) | 2027-08-18 → 2027-08-25 (+7d) |  |
| 15 | **Installation of uPVC pipes of various diameters crossing roadways** | 2027-04-08 → 2027-04-15 (+7d) | 2027-08-18 → 2027-08-25 (+7d) |  |
| MOD-ROC-PV-100 | Demarcation and traffic diversion (if required) for Road Crossing Zone 1 | 2027-04-08 → 2027-04-15 (+7d) | 2027-04-14 → 2027-04-21 (+7d) | -79d → -85d |
| MOD-ROC-PV-110 | Saw cutting and removal of asphalt (if applicable) for Road Crossing Zone 1 | 2027-04-15 → 2027-04-22 (+7d) | 2027-04-28 → 2027-05-05 (+7d) | -79d → -85d |
| MOD-ROC-PV-120 | Excavation across road width to required depth for Road Crossing Zone 1 | 2027-04-29 → 2027-05-06 (+7d) | 2027-05-27 → 2027-06-03 (+7d) | -79d → -85d |
| MOD-ROC-PV-130 | Preparation of trench base with compacted bedding for Road Crossing Zone 1 | 2027-05-29 → 2027-06-05 (+7d) | 2027-06-14 → 2027-06-21 (+7d) | -79d → -85d |
| MOD-ROC-PV-140 | Laying of uPVC pipe (300mm, 315mm, 400mm, 600mm dia) for Road Crossing Zone 1 | 2027-06-15 → 2027-06-22 (+7d) | 2027-07-08 → 2027-07-15 (+7d) | -79d → -85d |
| MOD-ROC-PV-150 | Placement of supports and protection around the pipe for Road Crossing Zone 1 | 2027-07-10 → 2027-07-17 (+7d) | 2027-07-20 → 2027-07-27 (+7d) | -79d → -85d |
| MOD-ROC-PV-160 | Testing of installed pipeline for Road Crossing Zone 1 | 2027-07-21 → 2027-07-28 (+7d) | 2027-07-27 → 2027-08-03 (+7d) | -79d → -85d |
| MOD-ROC-PV-170 | Backfilling and compaction in layers for Road Crossing Zone 1 | 2027-07-28 → 2027-08-04 (+7d) | 2027-08-11 → 2027-08-18 (+7d) | -79d → -85d |
| MOD-ROC-PV-180 | Reinstatement of road surface for Road Crossing Zone 1 | 2027-08-12 → 2027-08-19 (+7d) | 2027-08-18 → 2027-08-25 (+7d) | -79d → -85d |
| 16 | **GRP Road Crossing Pipes** | 2027-08-03 → 2027-08-10 (+7d) | 2027-10-19 → 2027-10-26 (+7d) |  |
| 17 | **Installation of GRP pipes (800mm–1000mm dia) for road crossings** | 2027-08-03 → 2027-08-10 (+7d) | 2027-10-19 → 2027-10-26 (+7d) |  |
| MOD-ROC-GR-100 | Set out location and coordinate with road authority for Road Crossing Zone 1 | 2027-08-03 → 2027-08-10 (+7d) | 2027-08-08 → 2027-08-15 (+7d) | -131d → -137d |
| MOD-ROC-GR-110 | Excavate trench across road at designed depth for Road Crossing Zone 1 | 2027-08-09 → 2027-08-16 (+7d) | 2027-08-17 → 2027-08-24 (+7d) | -131d → -137d |
| MOD-ROC-GR-120 | Lay compacted granular bedding for Road Crossing Zone 1 | 2027-08-18 → 2027-08-25 (+7d) | 2027-08-26 → 2027-09-02 (+7d) | -131d → -137d |
| MOD-ROC-GR-130 | Install GRP pipe (800mm & 1000mm dia) for Road Crossing Zone 1 | 2027-08-28 → 2027-09-04 (+7d) | 2027-09-07 → 2027-09-14 (+7d) | -131d → -137d |
| MOD-ROC-GR-140 | Provide structural supports and closure at both ends for Road Crossing Zone 1 | 2027-09-08 → 2027-09-15 (+7d) | 2027-09-18 → 2027-09-26 (+8d) | -131d → -137d |
| MOD-ROC-GR-150 | Perform leak testing as per specifications for Road Crossing Zone 1 | 2027-09-19 → 2027-09-27 (+8d) | 2027-09-25 → 2027-10-02 (+7d) | -131d → -137d |
| MOD-ROC-GR-160 | Backfill and compact in layers for Road Crossing Zone 1 | 2027-09-26 → 2027-10-03 (+7d) | 2027-10-04 → 2027-10-11 (+7d) | -131d → -137d |
| MOD-ROC-GR-170 | Reinstate road surface (asphalt/concrete) for Road Crossing Zone 1 | 2027-10-05 → 2027-10-12 (+7d) | 2027-10-13 → 2027-10-20 (+7d) | -131d → -137d |
| MOD-ROC-GR-180 | Final inspection and approval by relevant authority for Road Crossing Zone 1 | 2027-10-14 → 2027-10-21 (+7d) | 2027-10-19 → 2027-10-26 (+7d) | -131d → -137d |
| 1 | **General** |  | 2027-10-10 → 2027-10-17 (+7d) |  |
| 3 | **Local Roads** |  | 2027-06-09 → 2027-06-16 (+7d) |  |
| 1 | **Bituminous Construction** | 2027-04-07 → 2027-04-14 (+7d) | 2027-05-01 → 2027-05-08 (+7d) |  |
| 1 | **Bituminous Foundation Layer (MC 1)** | 2027-04-07 → 2027-04-14 (+7d) | 2027-04-15 → 2027-04-22 (+7d) |  |
| MOD-LOR-BC-002 | Prepare subgrade for Local Roads | 2027-04-07 → 2027-04-14 (+7d) | 2027-04-11 → 2027-04-18 (+7d) | -40d → -46d |
| MOD-LOR-BC-003 | Apply MC 1 bituminous layer for Local Roads | 2027-04-12 → 2027-04-19 (+7d) | 2027-04-15 → 2027-04-22 (+7d) | -40d → -46d |
| 2 | **Bituminous Base Layer (Grade 1 - Class A, 70mm)** | 2027-04-17 → 2027-04-24 (+7d) | 2027-04-21 → 2027-04-28 (+7d) |  |
| MOD-LOR-BC-005 | Spread and compact bituminous mix for Local Roads | 2027-04-17 → 2027-04-24 (+7d) | 2027-04-21 → 2027-04-28 (+7d) | -40d → -46d |
| 3 | **Bituminous Top Layer (Grade 1 - Class A, 50mm)** | 2027-04-22 → 2027-04-29 (+7d) | 2027-05-01 → 2027-05-08 (+7d) |  |
| MOD-LOR-BC-007 | Apply adhesive layer (R.C) for Local Roads | 2027-04-22 → 2027-04-29 (+7d) | 2027-04-26 → 2027-05-03 (+7d) | -40d → -46d |
| MOD-LOR-BC-008 | Spread and compact bituminous concrete for Local Roads | 2027-04-27 → 2027-05-04 (+7d) | 2027-05-01 → 2027-05-08 (+7d) | -40d → -46d |
| 2 | **Precast Curbs (Type K1-D)** |  | 2027-06-09 → 2027-06-16 (+7d) |  |
| MOD-LOR-PC-001 | Excavation & Subgrade Preparation for Local Roads |  | 2027-05-05 → 2027-05-12 (+7d) | -40d → -46d |
| MOD-LOR-PC-002 | Pour concrete base & hunching for Local Roads |  | 2027-05-10 → 2027-05-22 (+12d) | -40d → -46d |
| MOD-LOR-PC-003 | Install precast curbs for Local Roads |  | 2027-05-26 → 2027-06-02 (+7d) | -40d → -46d |
| MOD-LOR-PC-004 | Backfill & compact for Local Roads |  | 2027-05-31 → 2027-06-07 (+7d) | -40d → -46d |
| MOD-LOR-PC-005 | Finishing & Waste Disposal for Local Roads | 2027-06-01 → 2027-06-08 (+7d) | 2027-06-09 → 2027-06-16 (+7d) | -40d → -46d |
| 2 | **Arterial Roads** |  | 2027-04-06 → 2027-04-13 (+7d) |  |
| 1 | **Earthworks** | 2027-01-16 → 2027-01-23 (+7d) | 2027-01-18 → 2027-01-25 (+7d) |  |
| MOD-ARR-EW-001 | Clear vegetation for Arterial Roads | 2027-01-16 → 2027-01-23 (+7d) | 2027-01-17 → 2027-01-24 (+7d) | -40d → -46d |
| MOD-ARR-EW-002 | Site Grading for Arterial Roads | 2027-01-17 → 2027-01-24 (+7d) | 2027-01-18 → 2027-01-25 (+7d) | -40d → -46d |
| 2 | **Precast Curbs (Type K1-D)** |  | 2027-04-06 → 2027-04-13 (+7d) |  |
| MOD-ARR-PC-001 | Excavation & Subgrade Prep for Arterial Roads |  | 2027-01-24 → 2027-01-31 (+7d) | -40d → -46d |
| MOD-ARR-PC-002 | Concrete Base & Hunching for Arterial Roads |  | 2027-01-31 → 2027-02-08 (+8d) | -40d → -46d |
| MOD-ARR-PC-003 | Curb Installation for Arterial Roads |  | 2027-03-02 → 2027-03-16 (+14d) | -40d → -46d |
| MOD-ARR-PC-004 | Backfilling & Compaction for Arterial Roads | 2027-03-02 → 2027-03-17 (+15d) | 2027-03-18 → 2027-03-25 (+7d) | -40d → -46d |
| MOD-ARR-PC-005 | Finishing for Arterial Roads | 2027-03-20 → 2027-03-27 (+7d) | 2027-03-28 → 2027-04-04 (+7d) | -40d → -46d |
| MOD-ARR-PC-006 | Waste Disposal for Arterial Roads | 2027-03-29 → 2027-04-05 (+7d) | 2027-04-06 → 2027-04-13 (+7d) | -40d → -46d |
| 4 | **Communications** |  | 2027-04-29 → 2027-05-06 (+7d) |  |
| 1 | **Ductworks** |  | 2027-04-11 → 2027-04-18 (+7d) |  |
| 1 | **Concrete-Protected Service Culverts (50mm, 8 Outlets)** |  | 2027-03-30 → 2027-04-06 (+7d) |  |
| MOD-COC-DW-002 | Trench Excavation for Communications |  | 2027-02-24 → 2027-03-08 (+12d) | -134.66d → -140.66d |
| MOD-COC-DW-003 | Culvert Installation & Concrete Protection for Communications |  | 2027-02-28 → 2027-03-15 (+15d) | -134.66d → -140.66d |
| MOD-COC-DW-004 | Backfilling & Compaction for Communications |  | 2027-03-04 → 2027-03-18 (+14d) | -134.66d → -140.66d |
| MOD-COC-DW-005 | Testing & Restoration for Communications |  | 2027-03-30 → 2027-04-06 (+7d) | 11.55d → 5.55d |
| 2 | **Road Crossing Ducts (Exit 8)** |  | 2027-04-11 → 2027-04-18 (+7d) |  |
| MOD-COC-DW-007 | Horizontal Directional Drilling (HDD) for Communications |  | 2027-04-01 → 2027-04-08 (+7d) | 11.55d → 5.55d |
| MOD-COC-DW-008 | Duct Installation & Joint Sealing for Communications |  | 2027-04-03 → 2027-04-10 (+7d) | 11.55d → 5.55d |
| MOD-COC-DW-009 | Asphalt/Paving Restoration for Communications |  | 2027-04-11 → 2027-04-18 (+7d) | 11.55d → 5.55d |
| 3 | **Manholes (Telecom, 2000x1000x1001mm)** |  | 2027-04-29 → 2027-05-06 (+7d) |  |
| MOD-COC-MH-002 | Concrete Works - Foundation - Wall - Roof for Communications |  | 2027-04-11 → 2027-04-18 (+7d) | 11.55d → 5.55d |
| MOD-COC-MH-003 | Frame/Cover Installation for Communications |  | 2027-04-11 → 2027-04-18 (+7d) | 11.55d → 5.55d |
| MOD-COC-MH-004 | Testing & Handover for Communications | 2027-04-11 → 2027-04-18 (+7d) | 2027-04-29 → 2027-05-06 (+7d) | 11.55d → 5.55d |
| 11 | **Landscape** | 2027-02-28 → 2027-03-15 (+15d) | 2027-10-10 → 2027-10-17 (+7d) |  |

| ID | Task | Start | Finish | Total float |
| --- | --- | --- | --- | --- |
| 1 | **Supply & Planting of Trees and Shrubs** | 2027-04-07 → 2027-04-14 (+7d) | 2027-08-05 → 2027-08-12 (+7d) |  |
| 15 | **planting of trees, shrubs, and vines** | 2027-04-07 → 2027-04-14 (+7d) | 2027-08-05 → 2027-08-12 (+7d) |  |
| MOD-LNS-PT-002 | Site demarcation and marking of plant locations for Landscape | 2027-04-07 → 2027-04-14 (+7d) | 2027-04-17 → 2027-04-24 (+7d) | -143.3d → -149.3d |
| MOD-LNS-PT-003 | Excavation of planting pits as per specification for Landscape | 2027-04-17 → 2027-04-24 (+7d) | 2027-05-05 → 2027-05-12 (+7d) | -143.3d → -149.3d |
| MOD-LNS-PT-004 | Placement of sweet soil/potting soil as required for Landscape | 2027-05-05 → 2027-05-12 (+7d) | 2027-06-03 → 2027-06-10 (+7d) | -143.3d → -149.3d |
| MOD-LNS-PT-005 | Placement of gravel bed for drainage (if applicable) for Landscape | 2027-06-03 → 2027-06-10 (+7d) | 2027-06-22 → 2027-06-29 (+7d) | -143.3d → -149.3d |
| MOD-LNS-PT-006 | Planting of Palm tree, shrubs and trees for Landscape | 2027-06-22 → 2027-06-29 (+7d) | 2027-06-29 → 2027-07-06 (+7d) | -143.3d → -149.3d |
| MOD-LNS-PT-007 | Backfilling and compacting around the plant base for Landscape | 2027-06-29 → 2027-07-06 (+7d) | 2027-07-04 → 2027-07-11 (+7d) | -88.3d → -94.3d |
| MOD-LNS-PT-008 | Installation of semi-permeable membrane (if required) for Landscape | 2027-07-04 → 2027-07-11 (+7d) | 2027-07-22 → 2027-07-29 (+7d) | -88.3d → -94.3d |
| MOD-LNS-PT-009 | Initial watering and mulching for Landscape | 2027-07-22 → 2027-07-29 (+7d) | 2027-08-01 → 2027-08-08 (+7d) | -88.3d → -94.3d |
| MOD-LNS-PT-010 | Labeling/tagging (if specified) for Landscape | 2027-08-01 → 2027-08-08 (+7d) | 2027-08-05 → 2027-08-12 (+7d) | -88.3d → -94.3d |
| 16 | **Gravel Layer and Bed Preparation** | 2027-02-28 → 2027-03-15 (+15d) | 2027-05-01 → 2027-05-08 (+7d) |  |
| 17 | **Installation of gravel layers and soil beds to support planting and drainage.** | 2027-02-28 → 2027-03-15 (+15d) | 2027-05-01 → 2027-05-08 (+7d) |  |
| MOD-LNS-GL-002 | Grading of planting areas for Landscape | 2027-02-28 → 2027-03-15 (+15d) | 2027-03-03 → 2027-03-17 (+14d) | -134.66d → -140.66d |
| MOD-LNS-GL-003 | Excavation to required depth for Landscape | 2027-03-03 → 2027-03-17 (+14d) | 2027-03-16 → 2027-03-23 (+7d) | -134.66d → -140.66d |
| MOD-LNS-GL-004 | Placement of 50mm gravel layer for green areas for Landscape | 2027-03-27 → 2027-04-03 (+7d) | 2027-04-07 → 2027-04-14 (+7d) | -143.3d → -149.3d |
| MOD-LNS-GL-005 | Placement of 150mm gravel bed for drainage network for Landscape | 2027-04-07 → 2027-04-14 (+7d) | 2027-04-14 → 2027-04-21 (+7d) | -143.3d → -149.3d |
| MOD-LNS-GL-006 | Spreading and compacting the gravel for Landscape | 2027-04-14 → 2027-04-21 (+7d) | 2027-04-21 → 2027-04-28 (+7d) | -9.3d → -15.3d |
| MOD-LNS-GL-007 | Overlay of semi-permeable membrane (if applicable) for Landscape | 2027-04-21 → 2027-04-28 (+7d) | 2027-04-26 → 2027-05-03 (+7d) | -9.3d → -15.3d |
| MOD-LNS-GL-008 | Spreading of potting soil/sweet soil as top layer for Landscape | 2027-04-26 → 2027-05-03 (+7d) | 2027-05-01 → 2027-05-08 (+7d) | -9.3d → -15.3d |
| 2 | **Landscape Irrigation System** | 2027-06-29 → 2027-07-06 (+7d) | 2027-10-10 → 2027-10-17 (+7d) |  |
| 17 | **Design, supply, and installation of irrigation lines for arterial road landscape zones.** | 2027-06-29 → 2027-07-06 (+7d) | 2027-10-10 → 2027-10-17 (+7d) |  |
| MOD-LNS-LI-002 | Approval of design and layout by Owner/Engineer for Landscape | 2027-06-29 → 2027-07-06 (+7d) | 2027-07-07 → 2027-07-14 (+7d) | -143.3d → -149.3d |
| MOD-LNS-LI-003 | Excavation for main and lateral lines for Landscape | 2027-07-07 → 2027-07-14 (+7d) | 2027-07-24 → 2027-07-31 (+7d) | -143.3d → -149.3d |
| MOD-LNS-LI-004 | Supply and installation of irrigation piping and fittings for Landscape | 2027-07-24 → 2027-07-31 (+7d) | 2027-07-31 → 2027-08-07 (+7d) | -143.3d → -149.3d |
| MOD-LNS-LI-005 | Valve box installation and controller placement for Landscape | 2027-07-31 → 2027-08-07 (+7d) | 2027-08-16 → 2027-08-23 (+7d) | -143.3d → -149.3d |
| MOD-LNS-LI-006 | Connection to water source and pump system (if applicable) for Landscape | 2027-08-16 → 2027-08-23 (+7d) | 2027-09-08 → 2027-09-15 (+7d) | -143.3d → -149.3d |
| MOD-LNS-LI-007 | Testing of the irrigation network for leaks and performance for Landscape | 2027-09-08 → 2027-09-15 (+7d) | 2027-09-12 → 2027-09-19 (+7d) | -143.3d → -149.3d |
| MOD-LNS-LI-008 | Backfilling and surface reinstatement for Landscape | 2027-09-12 → 2027-09-19 (+7d) | 2027-10-03 → 2027-10-10 (+7d) | -143.3d → -149.3d |
| MOD-LNS-LI-009 | Commissioning and operational approval for Landscape | 2027-10-03 → 2027-10-10 (+7d) | 2027-10-10 → 2027-10-17 (+7d) | -143.3d → -149.3d |
| 9 | **Testing & Commissioning & Closeout** |  | 2027-11-03 → 2027-11-10 (+7d) |  |
| 1 | **Testing & Commissioning** |  | 2027-06-20 → 2027-06-27 (+7d) |  |
| 1 | **Zone 3** |  | 2027-06-20 → 2027-06-27 (+7d) |  |
| A103610 | Testing and Commissioning for Irrigation Network Zone 3 |  | 2027-01-09 → 2027-01-16 (+7d) | 50.23d → 44.23d |
| A103590 | Testing and Commissioning for Rain Water Drainage Network Zone 3 |  | 2027-01-04 → 2027-01-11 (+7d) | 54.58d → 48.58d |
| A103600 | Testing and Commissioning for Potable Water Network Zone 3 |  | 2026-12-21 → 2026-12-28 (+7d) | 66.03d → 60.03d |
| A102060 | Testing and Commissioning for Sewerage Network Zone 3 |  | 2027-01-18 → 2027-01-24 (+6d) | 42.18d → 36.6d |
| A103620 | Testing and Commissioning for Pumping Station Zone 3 | 2027-05-26 → 2027-06-02 (+7d) | 2027-06-20 → 2027-06-27 (+7d) | -69.35d → -75.35d |
| 2 | **Zone 2** |  | 2027-01-18 → 2027-01-25 (+7d) |  |
| A103660 | Testing and Commissioning for Potable Water Network Zone 2 |  | 2026-12-30 → 2027-01-06 (+7d) | 58.05d → 52.05d |
| A103670 | Testing and Commissioning for Irrigation Network Zone 2 |  | 2026-12-17 → 2026-12-24 (+7d) | 69.15d → 63.15d |
| A103640 | Testing and Commissioning for Sewerage Network Zone 2 |  | 2027-01-18 → 2027-01-25 (+7d) | 41.8d → 36.16d |
| A103650 | Testing and Commissioning for Rain Water Drainage Network Zone 2 |  | 2026-12-22 → 2026-12-29 (+7d) | 65.37d → 59.37d |
| 3 | **Zone 1** |  | 2027-04-29 → 2027-05-06 (+7d) |  |
| A103710 | Testing and Commissioning for Potable Water Network Zone 1 |  | 2026-12-29 → 2027-01-05 (+7d) | 58.65d → 52.65d |
| A103700 | Testing and Commissioning for Rain Water Drainage Network Zone 1 |  | 2026-12-13 → 2026-12-20 (+7d) | 72.78d → 66.78d |
| A103720 | Testing and Commissioning for Irrigation Network Zone 1 |  | 2026-12-16 → 2026-12-23 (+7d) | 69.65d → 63.65d |
| A103690 | Testing and Commissioning for Sewerage Network Zone 1 |  | 2027-01-24 → 2027-01-30 (+6d) | 36.85d → 32.15d |
| A103730 | Testing and Commissioning for Pumping Station Zone 1 | 2027-04-18 → 2027-04-25 (+7d) | 2027-04-29 → 2027-05-06 (+7d) | -29.21d → -35.21d |
| 4 | **General** |  | 2027-05-01 → 2027-05-08 (+7d) |  |
| A103630 | Testing and Commissioning for Communication |  | 2027-05-01 → 2027-05-08 (+7d) | 11.55d → 5.55d |
| 2 | **As-Built** | 2027-01-16 → 2027-01-23 (+7d) | 2027-11-03 → 2027-11-10 (+7d) |  |
| HO-13 | Earthworks as-built Submittals & Approval | 2027-01-16 → 2027-01-23 (+7d) | 2027-02-10 → 2027-02-23 (+13d) | 65.4d → 59.4d |
| HO-23 | Roadworks as-built Submittals & Approval | 2027-06-10 → 2027-06-17 (+7d) | 2027-07-04 → 2027-07-11 (+7d) | -40d → -46d |
| HO-0001 | Mechanical as-built Submittals & Approval | 2027-06-20 → 2027-06-27 (+7d) | 2027-07-14 → 2027-07-21 (+7d) | -69.35d → -75.35d |
| HO-3 | Electrical as-built Submittals & Approval | 2027-06-20 → 2027-06-27 (+7d) | 2027-07-14 → 2027-07-21 (+7d) | -48.35d → -54.35d |
| HO-33 | Landscape as-built Submittals & Approval | 2027-10-10 → 2027-10-17 (+7d) | 2027-11-03 → 2027-11-10 (+7d) | -143.3d → -149.3d |
| 3 | **Handover** | 2027-07-14 → 2027-07-21 (+7d) | 2027-08-08 → 2027-08-15 (+7d) |  |
| HO-0003 | Handover & Demobilization | 2027-07-14 → 2027-07-21 (+7d) | 2027-08-08 → 2027-08-15 (+7d) | -69.35d → -75.35d |

## Version 9 (data date 2026-11-21, saved 2026-11-24, file DAM3-02-008-WPR.66 - 2026-24-11.xer)

Last finish 2027-11-10 → 2027-11-17 (+7d). Complete tasks 488 → 494.

Changed:

| ID | Task | Start | Finish | Total float |
| --- | --- | --- | --- | --- |
| 1 | **Milestones** |  | 2027-11-10 → 2027-11-17 (+7d) |  |
| MIL-0003 | Submission of Report, Work Plan, and Schedule | 2026-11-14 → 2026-11-21 (+7d) | 2026-11-14 → 2026-11-21 (+7d) | 186d → 179d |
| MIL-0004 | Submission and Approval of Drawings and Specifications | 2026-11-19 → 2026-11-26 (+7d) | 2026-11-19 → 2026-11-26 (+7d) | -203d → -210d |
| MIL-0006 | Completion of Rainwater Drainage Works | 2027-01-07 → 2027-01-14 (+7d) | 2027-01-07 → 2027-01-14 (+7d) | -164.57d → -171.57d |
| MIL-0005 | Completion of Water Networks and Tanks | 2027-02-02 → 2027-02-11 (+9d) | 2027-02-02 → 2027-02-11 (+9d) | -33.5d → -42.5d |
| MIL-0007 | Completion of All Project Services | 2027-10-26 → 2027-11-02 (+7d) | 2027-10-26 → 2027-11-02 (+7d) | -161d → -168d |
| MIL-0008 | Final Handover | 2027-11-10 → 2027-11-17 (+7d) | 2027-11-10 → 2027-11-17 (+7d) | -175.38d → -182.38d |
| 2 | **Mobilization** |  | 2027-02-02 → 2027-02-11 (+9d) |  |
| 8 | **Deliverables** |  | 2027-02-02 → 2027-02-11 (+9d) |  |
| 1 | **Submittals** |  | 2027-01-21 → 2027-01-28 (+7d) |  |
| S10002 | Prepare & Submit Method of Statement |  | 2026-11-17 → 2026-11-24 (+7d) | 32.4d → 26.4d |
| S100015 | Prepare & Submit Pre-commissioning/ Commissioning Plan/ Startup/ Testing / Handover Plan | 2026-11-14 → 2026-11-21 (+7d) | 2027-01-21 → 2027-01-28 (+7d) | -28.6d → -34.6d |
| 2 | **Approvals** |  | 2027-02-02 → 2027-02-11 (+9d) |  |
| S100106 | Approval of Method of Statement |  | 2026-11-23 → 2026-11-30 (+7d) | 32.4d → 26.4d |
| S100086 | Approval of Pre-commissioning/ Commissioning Plan/ Startup/ Testing / Handover Plan | 2027-01-23 → 2027-01-30 (+7d) | 2027-02-02 → 2027-02-11 (+9d) | -28.6d → -34.6d |
| 7 | **Engineering** |  | 2026-11-25 → 2026-12-02 (+7d) |  |
| 3 | **Shop Drawing** |  | 2026-11-19 → 2026-11-26 (+7d) |  |
| 2 | **Approvals** |  | 2026-11-19 → 2026-11-26 (+7d) |  |
| A1630 | Landscape details approval |  | 2026-11-19 → 2026-11-26 (+7d) | -142d → -147d |
| 1 | **Material Submittal & Approval** |  | 2026-11-25 → 2026-12-02 (+7d) |  |
| 20 | **Long Lead Items** |  | 2026-11-18 → 2026-11-25 (+7d) |  |
| 13 | **Generators & Fuel Tanks - PS & Control Bldg backup power** |  | 2026-11-18 → 2026-11-25 (+7d) |  |
| A102930 | Material Submittal for Generators & Fuel Tanks - PS & Control Bldg backup power |  | 2026-11-17 → 2026-11-24 (+7d) | -29.21d → -34.21d |
| A102940 | Material Approval for Generators & Fuel Tanks - PS & Control Bldg backup power |  | 2026-11-18 → 2026-11-25 (+7d) | -29.21d → -34.21d |
| 21 | **Short Lead Items** |  | 2026-11-25 → 2026-12-02 (+7d) |  |
| 15 | **Interlock Tiles / Curbstone - Roads, Sidewalks, Landscape** |  | 2026-11-24 → 2026-12-01 (+7d) |  |
| A103180 | Material Approval for Interlock Tiles / Curbstone - Roads, Sidewalks, Landscape |  | 2026-11-24 → 2026-12-01 (+7d) | 1.2d → -3.8d |
| 16 | **Landscaping Materials (Soil, Plants) - Final works, softscape** |  | 2026-11-25 → 2026-12-02 (+7d) |  |
| A103200 | Material Approval for Landscaping Materials (Soil, Plants) - Final works, softscape |  | 2026-11-25 → 2026-12-02 (+7d) | -125.3d → -130.3d |
| 3 | **Procurement** |  | 2027-04-03 → 2027-04-10 (+7d) |  |
| 1 | **Prequalification** |  | 2026-11-18 → 2026-11-25 (+7d) |  |
| 21 | **Short Lead Items** |  | 2026-11-18 → 2026-11-25 (+7d) |  |
| 15 | **Interlock Tiles / Curbstone - Roads, Sidewalks, Landscape** |  | 2026-11-18 → 2026-11-25 (+7d) |  |
| A103560 | Prequalification Approval for Interlock Tiles / Curbstone - Roads, Sidewalks, Landscape |  | 2026-11-18 → 2026-11-25 (+7d) | 2.2d → -3.8d |
| 16 | **Landscaping Materials (Soil, Plants) - Final works, softscape** |  | 2026-11-18 → 2026-11-25 (+7d) |  |
| A103580 | Prequalification Approval for Landscaping Materials (Soil, Plants) - Final works, softscape |  | 2026-11-18 → 2026-11-25 (+7d) | -148.3d → -154.3d |
| 20 | **Long Lead Items** |  | 2027-01-11 → 2027-01-18 (+7d) |  |
| 2 | **Drainage Channel Covers (GRP / DI) - For storm and wastewater** |  | 2026-11-15 → 2026-11-22 (+7d) |  |
| A102570 | Custom Clearance for Drainage Channel Covers (GRP / DI) - For storm and wastewater |  | 2026-11-14 → 2026-11-21 (+7d) | -103.31d → -109.31d |
| A1230 | Manufacturing for Drainage Channel Covers (GRP / DI) - For storm and wastewater |  | 2026-11-14 → 2026-11-21 (+7d) | -103.31d → -109.31d |
| A1240 | Delivery for Drainage Channel Covers (GRP / DI) - For storm and wastewater |  | 2026-11-14 → 2026-11-21 (+7d) | -103.31d → -109.31d |
| A102580 | Staging Time for Drainage Channel Covers (GRP / DI) - For storm and wastewater |  | 2026-11-15 → 2026-11-22 (+7d) | -103.31d → -109.31d |
| 3 | **Control & Instrumentation Devices - Flow meters, pressure sensors** |  | 2026-12-10 → 2026-12-17 (+7d) |  |
| A1530 | Manufacturing for Control & Instrumentation Devices - Flow meters, pressure sensors |  | 2026-11-15 → 2026-11-22 (+7d) | -75.35d → -81.35d |
| A102610 | Custom Clearance for Control & Instrumentation Devices - Flow meters, pressure sensors |  | 2026-11-15 → 2026-11-22 (+7d) | -75.35d → -81.35d |
| A1570 | Delivery for Control & Instrumentation Devices - Flow meters, pressure sensors |  | 2026-11-17 → 2026-11-24 (+7d) | -75.35d → -81.35d |
| A102620 | Staging Time for Control & Instrumentation Devices - Flow meters, pressure sensors |  | 2026-12-10 → 2026-12-17 (+7d) | -75.35d → -81.35d |
| 10 | **Pumps (Sewage, Irrigation, Booster) - Especially for pumping stations** |  | 2026-11-18 → 2026-11-25 (+7d) |  |
| A102150 | Manufacturing for Pumps (Sewage, Irrigation, Booster) - Especially for pumping stations |  | 2026-11-14 → 2026-11-21 (+7d) | 12.8d → 6.8d |
| A102170 | Delivery for Pumps (Sewage, Irrigation, Booster) - Especially for pumping stations |  | 2026-11-16 → 2026-11-23 (+7d) | 12.8d → 6.8d |
| A102630 | Custom Clearance for Pumps (Sewage, Irrigation, Booster) - Especially for pumping stations |  | 2026-11-15 → 2026-11-22 (+7d) | 12.8d → 6.8d |
| A102640 | Staging Time for Pumps (Sewage, Irrigation, Booster) - Especially for pumping stations |  | 2026-11-18 → 2026-11-25 (+7d) | 12.8d → 6.8d |
| 13 | **Generators & Fuel Tanks - PS & Control Bldg backup power** |  | 2026-12-07 → 2026-12-14 (+7d) |  |
| A102230 | Manufacturing for Generators & Fuel Tanks - PS & Control Bldg backup power |  | 2026-11-22 → 2026-11-29 (+7d) | -35.21d → -41.21d |
| A102250 | Delivery for Generators & Fuel Tanks - PS & Control Bldg backup power |  | 2026-11-23 → 2026-11-30 (+7d) | -35.21d → -41.21d |
| A102670 | Custom Clearance for Generators & Fuel Tanks - PS & Control Bldg backup power |  | 2026-11-22 → 2026-11-29 (+7d) | -35.21d → -41.21d |
| A102680 | Staging Time for Generators & Fuel Tanks - PS & Control Bldg backup power |  | 2026-12-07 → 2026-12-14 (+7d) | -35.21d → -41.21d |
| 11 | **Odor Control Units - Sewer PS-specific** |  | 2027-01-11 → 2027-01-18 (+7d) |  |
| A102720 | Staging Time for Odor Control Units - Sewer PS-specific | 2026-12-07 → 2026-12-14 (+7d) | 2027-01-11 → 2027-01-18 (+7d) | -35.21d → -41.21d |
| 21 | **Short Lead Items** |  | 2027-04-03 → 2027-04-10 (+7d) |  |
| 1 | **Asphalt** |  | 2027-01-12 → 2027-01-19 (+7d) |  |
| A102730 | Delivery for Asphalt Phase 1 |  | 2027-01-12 → 2027-01-19 (+7d) | 21.58d → 15.58d |
| A103740 | Delivery for Asphalt Phase 2 |  | 2027-01-12 → 2027-01-19 (+7d) | 21.58d → 15.58d |
| A103750 | Delivery for Asphalt Phase 3 |  | 2027-01-12 → 2027-01-19 (+7d) | 65.66d → 59.66d |
| 15 | **Interlock Tiles / Curbstone - Roads, Sidewalks, Landscape** |  | 2026-12-14 → 2026-12-21 (+7d) |  |
| A102380 | Manufacturing for Interlock Tiles / Curbstone - Roads, Sidewalks, Landscape |  | 2026-11-24 → 2026-12-01 (+7d) | 1.2d → -4.8d |
| A102400 | Delivery for Interlock Tiles / Curbstone - Roads, Sidewalks, Landscape |  | 2026-11-25 → 2026-12-02 (+7d) | 1.2d → -4.8d |
| A102820 | Staging Time for Interlock Tiles / Curbstone - Roads, Sidewalks, Landscape |  | 2026-12-14 → 2026-12-21 (+7d) | 1.2d → -4.8d |
| 16 | **Landscaping Materials (Soil, Plants) - Final works, softscape** | 2026-11-25 → 2026-12-02 (+7d) | 2027-04-03 → 2027-04-10 (+7d) |  |
| A102350 | Issue PO for Landscaping Materials (Soil, Plants) - Final works, softscape | 2026-11-25 → 2026-12-02 (+7d) | 2026-11-30 → 2026-12-07 (+7d) | -149.3d → -155.3d |

| ID | Task | Start | Finish | Total float |
| --- | --- | --- | --- | --- |
| A102360 | Manufacturing for Landscaping Materials (Soil, Plants) - Final works, softscape | 2026-11-30 → 2026-12-07 (+7d) | 2027-02-10 → 2027-02-23 (+13d) | -149.3d → -155.3d |
| A102390 | Delivery for Landscaping Materials (Soil, Plants) - Final works, softscape | 2027-02-10 → 2027-02-23 (+13d) | 2027-04-03 → 2027-04-10 (+7d) | -149.3d → -155.3d |
| 4 | **Construction** |  | 2027-10-26 → 2027-11-02 (+7d) |  |
| 7 | **Zone 3** |  | 2027-07-07 → 2027-07-14 (+7d) |  |
| 2 | **Sewerage Network Zone 3** |  | 2027-06-02 → 2027-06-09 (+7d) |  |
| 3 | **Pipework: Supply, Installation, and Testing** |  | 2026-12-07 → 2026-12-14 (+7d) |  |
| 3 | **HDPE Pressure Pipes Installation (250mm–630mm)** |  | 2026-12-07 → 2026-12-14 (+7d) |  |
| MOD-SWN-PW-425 | Test (Pressure - Slope) HDPE for Sewerage Network Zone 3 |  | 2026-11-16 → 2026-11-23 (+7d) | 105.38d → 98.38d |
| MOD-SWN-PW-435 | Coating / Wrapping HDPE for Sewerage Network Zone 3 |  | 2026-11-22 → 2026-11-29 (+7d) | 105.38d → 98.38d |
| MOD-SWN-PW-395 | Backfilling & Warrning Tape HDPE for Sewerage Network Zone 3 | 2026-11-23 → 2026-11-30 (+7d) | 2026-12-07 → 2026-12-14 (+7d) | 105.38d → 98.38d |
| 4 | **Fittings and Valves** | 2026-11-14 → 2026-11-21 (+7d) | 2026-12-14 → 2026-12-21 (+7d) |  |
| MOD-SWN-FV-55 | Supply & Installation of HDPE Elbows for Sewerage Network Zone 3 | 2026-11-14 → 2026-11-21 (+7d) | 2026-11-19 → 2026-11-26 (+7d) | 69.08d → 63.08d |
| MOD-SWN-FV-65 | Gate Valves Installation for Sewerage Network Zone 3 | 2026-11-21 → 2026-11-28 (+7d) | 2026-11-24 → 2026-12-01 (+7d) | 69.08d → 63.08d |
| MOD-SWN-FV-75 | Drain Valves Installation for Sewerage Network Zone 3 | 2026-11-25 → 2026-12-02 (+7d) | 2026-11-29 → 2026-12-06 (+7d) | 69.08d → 63.08d |
| MOD-SWN-FV-85 | Air Breather & Air Release Valves Installation for Sewerage Network Zone 3 | 2026-11-30 → 2026-12-07 (+7d) | 2026-12-10 → 2026-12-17 (+7d) | 69.08d → 63.08d |
| MOD-SWN-FV-95 | Jointing & Piping Accessories Installation for Sewerage Network Zone 3 | 2026-12-12 → 2026-12-19 (+7d) | 2026-12-14 → 2026-12-21 (+7d) | 69.08d → 63.08d |
| 6 | **Valve & Flow Meter Chambers** |  | 2027-01-21 → 2027-01-25 (+4d) |  |
| 1 | **Valve Chambers Construction** |  | 2026-12-25 → 2027-01-01 (+7d) |  |
| MOD-SWN-PW-815 | Excavation Valve Chamber for Sewerage Network Zone 3 |  | 2026-11-21 → 2026-11-28 (+7d) | 61d → 56.85d |
| MOD-SWN-PW-825 | Lean Concrete / Bedding Valve Chamber for Sewerage Network Zone 3 |  | 2026-11-30 → 2026-12-07 (+7d) | 61d → 56.85d |
| MOD-SWN-VF-84 | Valve Chambers Construction Valve Chamber for Sewerage Network Zone 3 |  | 2026-12-03 → 2026-12-10 (+7d) | 61d → 56.85d |
| MOD-SWN-PW-835 | Test Valve Chamber for Sewerage Network Zone 3 |  | 2026-12-10 → 2026-12-17 (+7d) | 88.13d → 81.13d |
| MOD-SWN-PW-805 | Backfilling Valve Chamber for Sewerage Network Zone 3 | 2026-12-10 → 2026-12-17 (+7d) | 2026-12-25 → 2027-01-01 (+7d) | 88.13d → 81.13d |
| 2 | **Water Drain Chambers Construction** |  | 2027-01-11 → 2027-01-15 (+4d) |  |
| MOD-SWN-PW-855 | Excavation Water Drain Chamber for Sewerage Network Zone 3 |  | 2026-11-19 → 2026-11-25 (+6d) | 67.9d → 65.85d |
| MOD-SWN-PW-865 | Lean Concrete / Bedding Water Drain Chamber for Sewerage Network Zone 3 |  | 2026-11-26 → 2026-12-01 (+5d) | 67.9d → 65.85d |
| MOD-SWN-VF-94 | Water Drain Chambers Construction Water Drain Chamber for Sewerage Network Zone 3 |  | 2026-12-12 → 2026-12-16 (+4d) | 61d → 56.85d |
| MOD-SWN-PW-875 | Test Water Drain Chamber for Sewerage Network Zone 3 | 2026-12-12 → 2026-12-16 (+4d) | 2026-12-27 → 2026-12-31 (+4d) | 71.33d → 67.18d |
| MOD-SWN-PW-845 | Backfilling Water Drain Chamber for Sewerage Network Zone 3 | 2026-12-27 → 2026-12-31 (+4d) | 2027-01-11 → 2027-01-15 (+4d) | 71.33d → 67.18d |
| 3 | **Discharge Chambers Construction** |  | 2027-01-16 → 2027-01-20 (+4d) |  |
| MOD-SWN-PW-895 | Excavation Discharge Chamber for Sewerage Network Zone 3 |  | 2026-11-21 → 2026-11-28 (+7d) | 73.72d → 66.72d |
| MOD-SWN-PW-905 | Lean Concrete / Bedding Discharge Chamber for Sewerage Network Zone 3 |  | 2026-11-29 → 2026-12-06 (+7d) | 73.72d → 66.72d |
| MOD-SWN-VF-104 | Discharge Chambers Construction Discharge Chamber for Sewerage Network Zone 3 |  | 2026-12-17 → 2026-12-21 (+4d) | 61d → 56.85d |
| MOD-SWN-PW-915 | Test Discharge Chamber for Sewerage Network Zone 3 | 2026-12-17 → 2026-12-21 (+4d) | 2027-01-01 → 2027-01-05 (+4d) | 66d → 61.85d |
| MOD-SWN-PW-885 | Backfilling Discharge Chamber for Sewerage Network Zone 3 | 2027-01-01 → 2027-01-05 (+4d) | 2027-01-16 → 2027-01-20 (+4d) | 66d → 61.85d |
| 4 | **Flow Meter Chambers Construction** |  | 2027-01-21 → 2027-01-25 (+4d) |  |
| MOD-SWN-PW-935 | Excavation Flow Meter Chamber for Sewerage Network Zone 3 |  | 2026-11-22 → 2026-11-29 (+7d) | 73.38d → 66.38d |
| MOD-SWN-PW-945 | Lean Concrete / Bedding Flow Meter Chamber for Sewerage Network Zone 3 |  | 2026-12-04 → 2026-12-11 (+7d) | 73.38d → 66.38d |
| MOD-SWN-VF-114 | Flow Meter Chambers Construction Flow Meter Chamber for Sewerage Network Zone 3 | 2026-12-17 → 2026-12-21 (+4d) | 2026-12-22 → 2026-12-26 (+4d) | 61d → 56.85d |
| MOD-SWN-PW-955 | Test Flow Meter Chamber for Sewerage Network Zone 3 | 2026-12-22 → 2026-12-26 (+4d) | 2027-01-06 → 2027-01-10 (+4d) | 61d → 56.85d |
| MOD-SWN-PW-925 | Backfilling Flow Meter Chamber for Sewerage Network Zone 3 | 2027-01-06 → 2027-01-10 (+4d) | 2027-01-21 → 2027-01-25 (+4d) | 61d → 56.85d |
| 7 | **Manholes** |  | 2026-12-29 → 2027-01-05 (+7d) |  |
| 2 | **1500mm GRP Manholes (Standard & Backdrop)** |  | 2026-12-23 → 2026-12-30 (+7d) |  |
| MOD-SWN-PW-1655 | Excavation 1.5m GRP for Sewerage Network Zone 3 |  | 2026-11-16 → 2026-11-23 (+7d) | 83.92d → 76.92d |
| MOD-SWN-PW-1665 | Lean Concrete / Bedding 1.5m GRP for Sewerage Network Zone 3 |  | 2026-11-19 → 2026-11-26 (+7d) | 83.92d → 76.92d |
| MOD-SWN-MH-195 | 1500mm GRP Manholes (Standard & Backdrop) 1.5m GRP for Sewerage Network Zone 3 |  | 2026-11-23 → 2026-11-30 (+7d) | 83.92d → 76.92d |
| MOD-SWN-PW-1675 | Test 1.5m GRP for Sewerage Network Zone 3 | 2026-11-23 → 2026-11-30 (+7d) | 2026-12-08 → 2026-12-15 (+7d) | 89.72d → 82.72d |
| MOD-SWN-PW-1645 | Backfilling 1.5m GRP for Sewerage Network Zone 3 | 2026-12-08 → 2026-12-15 (+7d) | 2026-12-23 → 2026-12-30 (+7d) | 89.72d → 82.72d |
| 3 | **1800mm GRP Manholes (Standard & Backdrop)** |  | 2026-12-27 → 2027-01-03 (+7d) |  |
| MOD-SWN-PW-1695 | Excavation 1.8m GRP for Sewerage Network Zone 3 |  | 2026-11-15 → 2026-11-22 (+7d) | 88.54d → 81.54d |
| MOD-SWN-PW-1705 | Lean Concrete / Bedding 1.8m GRP for Sewerage Network Zone 3 |  | 2026-11-19 → 2026-11-26 (+7d) | 88.54d → 81.54d |
| MOD-SWN-MH-205 | 1800mm GRP Manholes (Standard & Backdrop) 1.8m GRP for Sewerage Network Zone 3 |  | 2026-11-27 → 2026-12-04 (+7d) | 83.92d → 76.92d |
| MOD-SWN-PW-1715 | Test 1.8m GRP for Sewerage Network Zone 3 | 2026-11-27 → 2026-12-04 (+7d) | 2026-12-12 → 2026-12-19 (+7d) | 86.32d → 79.32d |
| MOD-SWN-PW-1685 | Backfilling 1.8m GRP for Sewerage Network Zone 3 | 2026-12-12 → 2026-12-19 (+7d) | 2026-12-27 → 2027-01-03 (+7d) | 86.32d → 79.32d |
| 4 | **2000mm GRP Manholes (Standard & Backdrop)** |  | 2026-12-29 → 2027-01-05 (+7d) |  |
| MOD-SWN-PW-1735 | Excavation 2m GRP for Sewerage Network Zone 3 |  | 2026-11-15 → 2026-11-22 (+7d) | 91.31d → 84.31d |
| MOD-SWN-PW-1745 | Lean Concrete / Bedding 2m GRP for Sewerage Network Zone 3 |  | 2026-11-19 → 2026-11-26 (+7d) | 91.31d → 84.31d |
| MOD-SWN-MH-215 | 2000mm GRP Manholes (Standard & Backdrop) 2m GRP for Sewerage Network Zone 3 |  | 2026-11-29 → 2026-12-06 (+7d) | 83.92d → 76.92d |
| MOD-SWN-PW-1755 | Test 2m GRP for Sewerage Network Zone 3 | 2026-11-29 → 2026-12-06 (+7d) | 2026-12-14 → 2026-12-21 (+7d) | 83.92d → 76.92d |
| MOD-SWN-PW-1725 | Backfilling 2m GRP for Sewerage Network Zone 3 | 2026-12-14 → 2026-12-21 (+7d) | 2026-12-29 → 2027-01-05 (+7d) | 83.92d → 76.92d |
| 5 | **Pumping Stations** |  | 2027-06-02 → 2027-06-09 (+7d) |  |
| 1 | **Sewage Pumps and MCC System** | 2026-12-07 → 2026-12-14 (+7d) | 2027-01-25 → 2027-02-01 (+7d) |  |
| MOD-SWN-PS-644 | Sewage pumps (2x30 l/s, 1x115 l/s) incl. MCC – PS3 for Sewerage Network Zone 3 | 2026-12-07 → 2026-12-14 (+7d) | 2026-12-31 → 2027-01-07 (+7d) | 14.79d → 8.79d |
| MOD-SWN-PS-654 | Sewage pumps (2x100 l/s) incl. MCC – PS4 for Sewerage Network Zone 3 | 2026-12-31 → 2027-01-07 (+7d) | 2027-01-25 → 2027-02-01 (+7d) | 14.79d → 8.79d |
| 3 | **In-Line Booster Stations** | 2026-11-14 → 2026-11-21 (+7d) | 2027-01-25 → 2027-02-01 (+7d) |  |
| MOD-SWN-PS-674 | In-Line Booster Stations - Civil Works for Sewerage Network Zone 3 | 2026-11-14 → 2026-11-21 (+7d) | 2026-12-07 → 2026-12-14 (+7d) | 14.6d → 8.6d |
| MOD-SWN-PS-1144 | In-Line Booster Stations - Mechanical Works for Sewerage Network Zone 3 | 2026-12-08 → 2026-12-15 (+7d) | 2026-12-31 → 2027-01-07 (+7d) | 14.6d → 8.6d |
| MOD-SWN-PS-1154 | In-Line Booster Stations - Electrical Works for Sewerage Network Zone 3 | 2027-01-02 → 2027-01-09 (+7d) | 2027-01-25 → 2027-02-01 (+7d) | 14.6d → 8.6d |
| 7 | **Engine/Motor Control Center Buildings** | 2026-11-14 → 2026-11-21 (+7d) | 2026-11-22 → 2026-11-29 (+7d) |  |
| MOD-SWN-PS-934 | MCC Building – PS3 for Sewerage Network Zone 3 | 2026-11-14 → 2026-11-21 (+7d) | 2026-11-14 → 2026-11-21 (+7d) | -53.1d → -59.1d |

| ID | Task | Start | Finish | Total float |
| --- | --- | --- | --- | --- |
| MOD-SWN-PS-944 | MCC Building – PS4 for Sewerage Network Zone 3 | 2026-11-15 → 2026-11-22 (+7d) | 2026-11-22 → 2026-11-29 (+7d) | -20.7d → -26.7d |
| 4 | **Valves and Fittings (General Supply & Installation)** |  | 2026-12-17 → 2026-12-24 (+7d) |  |
| MOD-SWN-PS-714 | Valves, fittings, flow meters – PS3 for Sewerage Network Zone 3 |  | 2026-12-12 → 2026-12-19 (+7d) | -75.35d → -81.35d |
| MOD-SWN-PS-724 | Valves, fittings, flow meters – PS4 for Sewerage Network Zone 3 |  | 2026-12-15 → 2026-12-22 (+7d) | -75.35d → -81.35d |
| MOD-SWN-PS-734 | 35mm SS 316 mesh network – PS4 for Sewerage Network Zone 3 |  | 2026-12-17 → 2026-12-24 (+7d) | -75.35d → -81.35d |
| 5 | **Tank with Canopy** | 2026-12-17 → 2026-12-24 (+7d) | 2026-12-31 → 2027-01-07 (+7d) |  |
| MOD-SWN-PS-754 | Tank with canopy (per specs/drawings) - PS4 for Sewerage Network Zone 3 | 2026-12-17 → 2026-12-24 (+7d) | 2026-12-31 → 2027-01-07 (+7d) | -75.35d → -81.35d |
| 6 | **Pump Well and Valve Chambers** | 2026-12-31 → 2027-01-07 (+7d) | 2027-04-19 → 2027-04-26 (+7d) |  |
| MOD-SWN-PS-844 | Pump well & valve chamber structure – PS3 (2 wells, 5x5m, 11m depth) for Sewerage Network Zone 3 | 2026-12-31 → 2027-01-07 (+7d) | 2027-01-25 → 2027-02-01 (+7d) | -75.35d → -81.35d |
| MOD-SWN-PS-854 | Concrete wall (5x5x1m) inside PS3 well for Sewerage Network Zone 3 | 2027-01-25 → 2027-02-01 (+7d) | 2027-01-30 → 2027-02-06 (+7d) | -18.05d → -24.05d |
| MOD-SWN-PS-884 | Pump well & valve chamber structure – PS4 (1 well, 4m, 11m depth) for Sewerage Network Zone 3 | 2027-01-25 → 2027-02-01 (+7d) | 2027-03-02 → 2027-03-17 (+15d) | -75.35d → -81.35d |
| MOD-SWN-PS-864 | Valve chamber – PS3 for Sewerage Network Zone 3 | 2027-01-30 → 2027-02-06 (+7d) | 2027-03-06 → 2027-03-20 (+14d) | -18.05d → -24.05d |
| MOD-SWN-PS-894 | Valve chamber – PS4 for Sewerage Network Zone 3 | 2027-03-02 → 2027-03-17 (+15d) | 2027-04-04 → 2027-04-11 (+7d) | -75.35d → -81.35d |
| MOD-SWN-PS-874 | Flow meter chamber – PS3 for Sewerage Network Zone 3 | 2027-03-06 → 2027-03-20 (+14d) | 2027-03-23 → 2027-03-30 (+7d) | -18.05d → -24.05d |
| MOD-SWN-PS-904 | Flow meter chamber – PS4 for Sewerage Network Zone 3 | 2027-04-04 → 2027-04-11 (+7d) | 2027-04-19 → 2027-04-26 (+7d) | -75.35d → -81.35d |
| 8 | **Odor Control System Base/Plinth** | 2027-05-25 → 2027-06-01 (+7d) | 2027-06-01 → 2027-06-08 (+7d) |  |
| MOD-SWN-PS-954 | Concrete plinth below odor control – PS3 & PS4 for Sewerage Network Zone 3 | 2027-05-25 → 2027-06-01 (+7d) | 2027-06-01 → 2027-06-08 (+7d) | -75.35d → -81.35d |
| 10 | **Lighting Works** |  | 2027-06-02 → 2027-06-09 (+7d) |  |
| MOD-SWN-PS-1024 | 250W Flood Light installation – PS3 & PS4 for Sewerage Network Zone 3 |  | 2027-06-02 → 2027-06-09 (+7d) | -75.35d → -81.35d |
| 11 | **Duct Works** | 2027-04-19 → 2027-04-26 (+7d) | 2027-04-27 → 2027-05-04 (+7d) |  |
| MOD-SWN-PS-1034 | uPVC duct Track 1 – PS3 & PS4 for Sewerage Network Zone 3 | 2027-04-19 → 2027-04-26 (+7d) | 2027-04-20 → 2027-04-27 (+7d) | -75.35d → -81.35d |
| MOD-SWN-PS-1044 | uPVC duct Track 2 – PS3 & PS4 for Sewerage Network Zone 3 | 2027-04-20 → 2027-04-27 (+7d) | 2027-04-22 → 2027-04-29 (+7d) | -75.35d → -81.35d |
| MOD-SWN-PS-1054 | uPVC duct Track 8 – PS3 & PS4 for Sewerage Network Zone 3 | 2027-04-22 → 2027-04-29 (+7d) | 2027-04-27 → 2027-05-04 (+7d) | -75.35d → -81.35d |
| 12 | **Grounding Works** | 2027-04-27 → 2027-05-04 (+7d) | 2027-05-01 → 2027-05-08 (+7d) |  |
| MOD-SWN-PS-1064 | Grounding pit – PS3 & PS4 for Sewerage Network Zone 3 | 2027-04-27 → 2027-05-04 (+7d) | 2027-04-28 → 2027-05-05 (+7d) | -75.35d → -81.35d |
| MOD-SWN-PS-1074 | 600x600 Cable pull pit – PS3 & PS4 for Sewerage Network Zone 3 | 2027-04-28 → 2027-05-05 (+7d) | 2027-05-01 → 2027-05-08 (+7d) | -75.35d → -81.35d |
| 13 | **Landscaping / Interlocking Tiles** | 2027-05-01 → 2027-05-08 (+7d) | 2027-05-30 → 2027-06-06 (+7d) |  |
| MOD-SWN-PS-1084 | Building perimeter interlock tiles for Sewerage Network Zone 3 | 2027-05-01 → 2027-05-08 (+7d) | 2027-05-25 → 2027-06-01 (+7d) | -75.35d → -81.35d |
| MOD-SWN-PS-1094 | Entrance road paving tiles for Sewerage Network Zone 3 | 2027-05-25 → 2027-06-01 (+7d) | 2027-05-30 → 2027-06-06 (+7d) | -72.05d → -78.05d |
| 14 | **Pumping Station Internal Drainage Network** | 2027-05-01 → 2027-05-08 (+7d) | 2027-05-09 → 2027-05-20 (+11d) |  |
| MOD-SWN-PS-1104 | Internal surface drainage channels for Sewerage Network Zone 3 | 2027-05-01 → 2027-05-08 (+7d) | 2027-05-09 → 2027-05-20 (+11d) | -58.05d → -64.05d |
| 14 | **Rainwater Drainage Network Zone 3** |  | 2027-01-07 → 2027-01-14 (+7d) |  |
| 1 | **Pipe Laying Works** |  | 2026-12-13 → 2026-12-20 (+7d) |  |
| 2 | **Supply & Installation of uPVC Pipes (250–300mm dia)** |  | 2026-11-20 → 2026-11-27 (+7d) |  |
| MOD-RWN-PL-233 | Excavation to required depth UPVC for Rainwater Drainage Network Zone 3 |  | 2026-11-15 → 2026-11-22 (+7d) | -139.11d → -146.11d |
| MOD-RWN-PL-243 | Lean Concrete / Bedding UPVC for Rainwater Drainage Network Zone 3 |  | 2026-11-15 → 2026-11-22 (+7d) | -139.11d → -146.11d |
| MOD-RWN-PL-253 | Laying of uPVC pipe UPVC for Rainwater Drainage Network Zone 3 |  | 2026-11-16 → 2026-11-23 (+7d) | -139.11d → -146.11d |
| MOD-RWN-PL-283 | Test (Pressure-slope) UPVC for Rainwater Drainage Network Zone 3 |  | 2026-11-16 → 2026-11-23 (+7d) | -139.11d → -146.11d |
| MOD-RWN-PL-263 | Coating / Wrapping UPVC for Rainwater Drainage Network Zone 3 |  | 2026-11-17 → 2026-11-24 (+7d) | -113.31d → -120.31d |
| MOD-RWN-PL-293 | Backfilling & Warning Tape UPVC for Rainwater Drainage Network Zone 3 |  | 2026-11-20 → 2026-11-27 (+7d) | -116.91d → -123.91d |
| 3 | **Supply & Installation of GRP Pipes (350–800mm dia)** |  | 2026-11-19 → 2026-11-26 (+7d) |  |
| MOD-RWN-PL-343 | Test (Pressure-slope) GRP for Rainwater Drainage Network Zone 3 |  | 2026-11-19 → 2026-11-26 (+7d) | -115.56d → -122.56d |
| 4 | **uPVC Connection Pipes (150mm dia)** |  | 2026-12-13 → 2026-12-20 (+7d) |  |
| MOD-RWN-PL-373 | Excavate short trench paths UPVC Con. for Rainwater Drainage Network Zone 3 |  | 2026-11-14 → 2026-11-21 (+7d) | -137.29d → -144.29d |
| MOD-RWN-PL-383 | Lean Concrete / bedding material UPVC Con. for Rainwater Drainage Network Zone 3 |  | 2026-11-14 → 2026-11-21 (+7d) | -137.29d → -144.29d |
| MOD-RWN-PL-393 | Lay & connect UPVC Con. for Rainwater Drainage Network Zone 3 |  | 2026-11-17 → 2026-11-24 (+7d) | -139.11d → -146.11d |
| MOD-RWN-PL-403 | Test (Pressure-slope) UPVC Con. for Rainwater Drainage Network Zone 3 | 2026-11-17 → 2026-11-24 (+7d) | 2026-11-20 → 2026-11-27 (+7d) | -139.11d → -146.11d |
| MOD-RWN-PL-723 | Coating / Wrapping UPVC Con. for Rainwater Drainage Network Zone 3 | 2026-11-20 → 2026-11-27 (+7d) | 2026-12-11 → 2026-12-18 (+7d) | -139.11d → -146.11d |
| MOD-RWN-PL-413 | Backfilling & compaction UPVC Con. for Rainwater Drainage Network Zone 3 | 2026-12-11 → 2026-12-18 (+7d) | 2026-12-13 → 2026-12-20 (+7d) | -139.11d → -146.11d |
| 5 | **Precast Concrete Box Culverts** |  | 2027-01-07 → 2027-01-14 (+7d) |  |
| 1 | **Box Culverts (500x500mm to 3500x800mm)** |  | 2027-01-07 → 2027-01-14 (+7d) |  |
| MOD-RWN-PC-254 | Dewatering and trench shoring Box culvert for Rainwater Drainage Network Zone 3 |  | 2026-11-22 → 2026-11-29 (+7d) | -140.56d → -146.56d |
| MOD-RWN-PC-264 | Bedding preparation (gravel/lean concrete) Box culvert for Rainwater Drainage Network Zone 3 | 2026-11-22 → 2026-11-29 (+7d) | 2026-11-26 → 2026-12-03 (+7d) | -140.56d → -146.56d |
| MOD-RWN-PC-274 | Installation of box culvert units Box culvert for Rainwater Drainage Network Zone 3 | 2026-11-26 → 2026-12-03 (+7d) | 2026-12-08 → 2026-12-15 (+7d) | -140.56d → -146.56d |
| MOD-RWN-PC-284 | Alignment and joint sealing Box culvert for Rainwater Drainage Network Zone 3 | 2026-12-08 → 2026-12-15 (+7d) | 2026-12-13 → 2026-12-20 (+7d) | -140.56d → -146.56d |
| MOD-RWN-PC-294 | Construct headwalls/wing walls (if needed) Box culvert for Rainwater Drainage Network Zone 3 | 2026-12-13 → 2026-12-20 (+7d) | 2026-12-27 → 2027-01-03 (+7d) | -140.56d → -146.56d |
| MOD-RWN-PC-304 | Backfilling and compaction Box culvert for Rainwater Drainage Network Zone 3 | 2026-12-27 → 2027-01-03 (+7d) | 2027-01-04 → 2027-01-11 (+7d) | -140.56d → -146.56d |
| MOD-RWN-PC-314 | Surface finishing Box culvert for Rainwater Drainage Network Zone 3 | 2027-01-04 → 2027-01-11 (+7d) | 2027-01-07 → 2027-01-14 (+7d) | -140.56d → -146.56d |
| 4 | **Manholes** | 2026-11-26 → 2026-12-03 (+7d) | 2027-01-07 → 2027-01-14 (+7d) |  |
| 1 | **Circular GRP Manholes (1200–1800mm dia)** | 2026-11-26 → 2026-12-03 (+7d) | 2027-01-03 → 2027-01-10 (+7d) |  |
| MOD-RWN-MH-234 | Excavate to full manhole depth Circular Manhole for Rainwater Drainage Network Zone 3 | 2026-11-26 → 2026-12-03 (+7d) | 2026-12-05 → 2026-12-12 (+7d) | -136.56d → -142.56d |
| MOD-RWN-MH-244 | Dewatering and safety barriers Circular Manhole for Rainwater Drainage Network Zone 3 | 2026-12-05 → 2026-12-12 (+7d) | 2026-12-12 → 2026-12-19 (+7d) | -136.56d → -142.56d |
| MOD-RWN-MH-254 | Concrete base construction Circular Manhole for Rainwater Drainage Network Zone 3 | 2026-12-12 → 2026-12-19 (+7d) | 2026-12-14 → 2026-12-21 (+7d) | -136.56d → -142.56d |
| MOD-RWN-MH-264 | Install GRP manhole shaft sections Circular Manhole for Rainwater Drainage Network Zone 3 | 2026-12-14 → 2026-12-21 (+7d) | 2026-12-22 → 2026-12-29 (+7d) | -136.56d → -142.56d |
| MOD-RWN-MH-274 | Place slab and cover frame Circular Manhole for Rainwater Drainage Network Zone 3 | 2026-12-22 → 2026-12-29 (+7d) | 2026-12-29 → 2027-01-05 (+7d) | -136.56d → -142.56d |
| MOD-RWN-MH-284 | Waterproofing Circular Manhole for Rainwater Drainage Network Zone 3 | 2026-12-29 → 2027-01-05 (+7d) | 2026-12-31 → 2027-01-07 (+7d) | -136.56d → -142.56d |
| MOD-RWN-MH-294 | Backfilling and compaction Circular Manhole for Rainwater Drainage Network Zone 3 | 2026-12-31 → 2027-01-07 (+7d) | 2027-01-03 → 2027-01-10 (+7d) | -136.56d → -142.56d |
| 3 | **Concrete Manholes for 1500x1500 Box Pipes** | 2026-11-26 → 2026-12-03 (+7d) | 2027-01-03 → 2027-01-10 (+7d) |  |
| MOD-RWN-MH-374 | Excavation Concrete Manhole 1.5x1.5 for Rainwater Drainage Network Zone 3 | 2026-11-26 → 2026-12-03 (+7d) | 2026-12-03 → 2026-12-10 (+7d) | -136.56d → -142.56d |
| MOD-RWN-MH-384 | Base slab and wall shuttering Concrete Manhole 1.5x1.5 for Rainwater Drainage Network Zone 3 | 2026-12-03 → 2026-12-10 (+7d) | 2026-12-08 → 2026-12-15 (+7d) | -136.56d → -142.56d |

| ID | Task | Start | Finish | Total float |
| --- | --- | --- | --- | --- |
| MOD-RWN-MH-394 | Wall reinforcement and casting Concrete Manhole 1.5x1.5 for Rainwater Drainage Network Zone 3 | 2026-12-08 → 2026-12-15 (+7d) | 2026-12-17 → 2026-12-24 (+7d) | -136.56d → -142.56d |
| MOD-RWN-MH-404 | Roof slab with openings Concrete Manhole 1.5x1.5 for Rainwater Drainage Network Zone 3 | 2026-12-17 → 2026-12-24 (+7d) | 2026-12-22 → 2026-12-29 (+7d) | -136.56d → -142.56d |
| MOD-RWN-MH-414 | Masonry/benching works inside Concrete Manhole 1.5x1.5 for Rainwater Drainage Network Zone 3 | 2026-12-22 → 2026-12-29 (+7d) | 2026-12-28 → 2027-01-04 (+7d) | -136.56d → -142.56d |
| MOD-RWN-MH-424 | Install cover and frame Concrete Manhole 1.5x1.5 for Rainwater Drainage Network Zone 3 | 2026-12-28 → 2027-01-04 (+7d) | 2026-12-30 → 2027-01-06 (+7d) | -136.56d → -142.56d |
| MOD-RWN-MH-434 | Backfill in layers Concrete Manhole 1.5x1.5 for Rainwater Drainage Network Zone 3 | 2026-12-30 → 2027-01-06 (+7d) | 2027-01-03 → 2027-01-10 (+7d) | -136.56d → -142.56d |
| 2 | **Concrete Manholes for 1000x1000 Box Pipes** | 2026-11-26 → 2026-12-03 (+7d) | 2027-01-07 → 2027-01-14 (+7d) |  |
| MOD-RWN-MH-304 | Excavation Concrete Manhole 1x1 for Rainwater Drainage Network Zone 3 | 2026-11-26 → 2026-12-03 (+7d) | 2026-12-03 → 2026-12-10 (+7d) | -140.56d → -146.56d |
| MOD-RWN-MH-314 | Base slab and wall shuttering Concrete Manhole 1x1 for Rainwater Drainage Network Zone 3 | 2026-12-03 → 2026-12-10 (+7d) | 2026-12-08 → 2026-12-15 (+7d) | -140.56d → -146.56d |
| MOD-RWN-MH-324 | Wall reinforcement and casting Concrete Manhole 1x1 for Rainwater Drainage Network Zone 3 | 2026-12-08 → 2026-12-15 (+7d) | 2026-12-15 → 2026-12-22 (+7d) | -140.56d → -146.56d |
| MOD-RWN-MH-334 | Roof slab with openings Concrete Manhole 1x1 for Rainwater Drainage Network Zone 3 | 2026-12-15 → 2026-12-22 (+7d) | 2026-12-20 → 2026-12-27 (+7d) | -140.56d → -146.56d |
| MOD-RWN-MH-344 | Masonry/benching works inside Concrete Manhole 1x1 for Rainwater Drainage Network Zone 3 | 2026-12-20 → 2026-12-27 (+7d) | 2026-12-28 → 2027-01-04 (+7d) | -140.56d → -146.56d |
| MOD-RWN-MH-354 | Install cover and frame Concrete Manhole 1x1 for Rainwater Drainage Network Zone 3 | 2026-12-28 → 2027-01-04 (+7d) | 2027-01-02 → 2027-01-09 (+7d) | -140.56d → -146.56d |
| MOD-RWN-MH-364 | Backfill in layers Concrete Manhole 1x1 for Rainwater Drainage Network Zone 3 | 2027-01-02 → 2027-01-09 (+7d) | 2027-01-07 → 2027-01-14 (+7d) | -140.56d → -146.56d |
| 2 | **Chambers and Catch Basins** |  | 2026-12-01 → 2026-12-08 (+7d) |  |
| 1 | **Gully Outfalls** |  | 2026-11-28 → 2026-12-05 (+7d) |  |
| MOD-RWN-CC-198 | Provide slope protection (riprap) Gully Outfall for Rainwater Drainage Network Zone 3 |  | 2026-11-26 → 2026-12-03 (+7d) | -105.72d → -111.72d |
| MOD-RWN-CC-208 | Compact and shape terrain Gully Outfall for Rainwater Drainage Network Zone 3 |  | 2026-11-28 → 2026-12-05 (+7d) | -105.72d → -111.72d |
| 2 | **Rainwater Catch Basins** |  | 2026-11-26 → 2026-12-03 (+7d) |  |
| MOD-RWN-CC-258 | Backfill and surface finish Catch Basin for Rainwater Drainage Network Zone 3 |  | 2026-11-26 → 2026-12-03 (+7d) | -104.66d → -110.66d |
| 3 | **Precast Chambers for Absorption Pits** |  | 2026-12-01 → 2026-12-08 (+7d) |  |
| MOD-RWN-CC-308 | Backfill and compact Absorption Pit for Rainwater Drainage Network Zone 3 |  | 2026-12-01 → 2026-12-08 (+7d) | -108.41d → -114.41d |
| 3 | **Gully Outfalls to Swales** |  | 2026-12-17 → 2026-12-24 (+7d) |  |
| 1 | **Gully Outfalls to Swales** |  | 2026-12-01 → 2026-12-08 (+7d) |  |
| MOD-RWN-GO-111 | Excavate outfall channel Gully Outfall to Swales for Rainwater Drainage Network Zone 3 |  | 2026-11-26 → 2026-12-03 (+7d) | -108.56d → -114.56d |
| MOD-RWN-GO-121 | Place concrete apron or pipes Gully Outfall to Swales for Rainwater Drainage Network Zone 3 |  | 2026-11-28 → 2026-12-05 (+7d) | -108.56d → -114.56d |
| MOD-RWN-GO-131 | Provide slope protection (riprap) Gully Outfall to Swales for Rainwater Drainage Network Zone 3 |  | 2026-11-29 → 2026-12-06 (+7d) | -108.56d → -114.56d |
| MOD-RWN-GO-141 | Compact and shape terrain Gully Outfall to Swales for Rainwater Drainage Network Zone 3 | 2026-11-29 → 2026-12-06 (+7d) | 2026-12-01 → 2026-12-08 (+7d) | -108.56d → -114.56d |
| 2 | **Riprap Works & Protection** | 2026-11-26 → 2026-12-03 (+7d) | 2026-12-17 → 2026-12-24 (+7d) |  |
| MOD-RWN-GO-151 | Lay filter fabric/membrane for Rainwater Drainage Network Zone 3 | 2026-11-26 → 2026-12-03 (+7d) | 2026-11-30 → 2026-12-07 (+7d) | -122.56d → -128.56d |
| MOD-RWN-GO-161 | Place riprap/stone layer for Rainwater Drainage Network Zone 3 | 2026-11-30 → 2026-12-07 (+7d) | 2026-12-12 → 2026-12-19 (+7d) | -122.56d → -128.56d |
| MOD-RWN-GO-171 | Compact edges for Rainwater Drainage Network Zone 3 | 2026-12-12 → 2026-12-19 (+7d) | 2026-12-15 → 2026-12-22 (+7d) | -122.56d → -128.56d |
| MOD-RWN-GO-181 | Ensure hydraulic flow direction for Rainwater Drainage Network Zone 3 | 2026-12-15 → 2026-12-22 (+7d) | 2026-12-17 → 2026-12-24 (+7d) | -122.56d → -128.56d |
| 6 | **Backfilling & Bedding** |  | 2026-12-07 → 2026-12-14 (+7d) |  |
| 1 | **Backfilling Materials (Type A – 201–700mm Pipes)** |  | 2026-11-15 → 2026-11-22 (+7d) |  |
| MOD-RWN-BB-112 | Place granular bedding under pipe for Rainwater Drainage Network Zone 3 |  | 2026-11-14 → 2026-11-21 (+7d) | -94.65d → -100.65d |
| MOD-RWN-BB-122 | Lay and align pipe for Rainwater Drainage Network Zone 3 |  | 2026-11-14 → 2026-11-21 (+7d) | -94.65d → -100.65d |
| MOD-RWN-BB-132 | Backfill up to spring line for Rainwater Drainage Network Zone 3 |  | 2026-11-15 → 2026-11-22 (+7d) | -94.65d → -100.65d |
| MOD-RWN-BB-142 | Compact layer-wise for Rainwater Drainage Network Zone 3 |  | 2026-11-15 → 2026-11-22 (+7d) | -94.65d → -100.65d |
| MOD-RWN-BB-152 | Final fill to subgrade level for Rainwater Drainage Network Zone 3 |  | 2026-11-15 → 2026-11-22 (+7d) | -94.65d → -100.65d |
| 2 | **Gravel Bedding & Filter Cloth for uPVC Drain Pipes** |  | 2026-12-07 → 2026-12-14 (+7d) |  |
| MOD-RWN-BB-162 | Line trench with filter cloth for Rainwater Drainage Network Zone 3 |  | 2026-11-14 → 2026-11-21 (+7d) | -113.56d → -119.56d |
| MOD-RWN-BB-172 | Place and compact gravel bedding for Rainwater Drainage Network Zone 3 |  | 2026-11-15 → 2026-11-22 (+7d) | -113.56d → -119.56d |
| MOD-RWN-BB-182 | Lay pipe within gravel zone for Rainwater Drainage Network Zone 3 |  | 2026-11-17 → 2026-11-24 (+7d) | -113.56d → -119.56d |
| MOD-RWN-BB-192 | Wrap filter cloth above pipe for Rainwater Drainage Network Zone 3 |  | 2026-11-23 → 2026-11-30 (+7d) | -113.56d → -119.56d |
| MOD-RWN-BB-202 | Final fill and trench restoration for Rainwater Drainage Network Zone 3 | 2026-11-23 → 2026-11-30 (+7d) | 2026-12-07 → 2026-12-14 (+7d) | -113.56d → -119.56d |
| 7 | **Deep Basin for Groundwater Collection (2.5–3.0m)** |  | 2026-12-06 → 2026-12-13 (+7d) |  |
| MOD-RWN-DB-002 | Base and side wall construction (cast-in-situ or precast) for Rainwater Drainage Network Zone 3 |  | 2026-11-15 → 2026-11-22 (+7d) | -112.21d → -118.21d |
| MOD-RWN-DB-003 | Pipe connections for inflow for Rainwater Drainage Network Zone 3 |  | 2026-11-17 → 2026-11-24 (+7d) | -112.21d → -118.21d |
| MOD-RWN-DB-004 | Cover slab and access shaft for Rainwater Drainage Network Zone 3 |  | 2026-11-21 → 2026-11-28 (+7d) | -112.21d → -118.21d |
| MOD-RWN-DB-005 | Waterproofing & sealant for Rainwater Drainage Network Zone 3 |  | 2026-11-28 → 2026-12-05 (+7d) | -112.21d → -118.21d |
| MOD-RWN-DB-006 | Backfill in controlled layers for Rainwater Drainage Network Zone 3 | 2026-11-28 → 2026-12-05 (+7d) | 2026-12-06 → 2026-12-13 (+7d) | -112.21d → -118.21d |
| 13 | **Potable Water Network Zone 3** |  | 2027-02-02 → 2027-02-10 (+8d) |  |
| 13 | **Pipe Installation Works** |  | 2026-11-24 → 2026-12-01 (+7d) |  |
| MOD-PWN-PI-323 | Lean Concrete / Pipe Bedding Preparation for Potable Water Network Zone 3 |  | 2026-11-15 → 2026-11-22 (+7d) | 37.15d → 30.15d |
| MOD-PWN-PI-333 | HDPE Pipe Laying (200 mm to 710 mm) for Potable Water Network Zone 3 |  | 2026-11-19 → 2026-11-26 (+7d) | 37.15d → 30.15d |
| MOD-PWN-PI-343 | Test (Pressure-slope) for Potable Water Network Zone 3 |  | 2026-11-20 → 2026-11-27 (+7d) | 37.15d → 30.15d |
| MOD-PWN-PI-353 | Coating / Wrapping for Potable Water Network Zone 3 |  | 2026-11-22 → 2026-11-29 (+7d) | 37.15d → 30.15d |
| MOD-PWN-PI-363 | Backfilling & Warrning Tape for Potable Water Network Zone 3 |  | 2026-11-24 → 2026-12-01 (+7d) | 37.15d → 30.15d |
| 2 | **Valve Installation & Chambers** |  | 2026-12-05 → 2026-12-12 (+7d) |  |
| MOD-PWN-VC-87 | Butterfly Valves (355, 500, 630 mm) for Potable Water Network Zone 3 |  | 2026-11-14 → 2026-11-21 (+7d) | 23.33d → 17.33d |
| MOD-PWN-VC-97 | 3-exit (2 x 2.5-inch and 1 x 4-inch) dry vacuum cylinder detachable fire nozzle for Potable Water Network Zone 3 |  | 2026-11-14 → 2026-11-21 (+7d) | 23.33d → 17.33d |
| MOD-PWN-VC-107 | Valve Chamber Excavation for Potable Water Network Zone 3 |  | 2026-11-14 → 2026-11-21 (+7d) | 23.26d → 17.26d |
| MOD-PWN-VC-117 | RC Slab, Walls, or Precast Chambers for Potable Water Network Zone 3 |  | 2026-11-14 → 2026-11-21 (+7d) | 23.26d → 17.26d |
| MOD-PWN-VC-77 | Gate Valves (225–710 mm) for Potable Water Network Zone 3 |  | 2026-11-14 → 2026-11-21 (+7d) | 23.33d → 17.33d |
| MOD-PWN-VC-127 | Fixing Covers, Gratings, Frames for Potable Water Network Zone 3 |  | 2026-11-28 → 2026-12-05 (+7d) | 23.26d → 17.26d |
| MOD-PWN-VC-137 | Tagging & Painting for Potable Water Network Zone 3 | 2026-11-28 → 2026-12-05 (+7d) | 2026-12-05 → 2026-12-12 (+7d) | 23.26d → 17.26d |
| 3 | **Flow Meter Installation** |  | 2026-12-26 → 2027-01-02 (+7d) |  |
| MOD-PWN-FM-55 | Chamber Excavation (280 mm, 300 mm, 500 mm, 800 mm) for Potable Water Network Zone 3 |  | 2026-11-14 → 2026-11-21 (+7d) | 24.5d → 18.5d |
| MOD-PWN-FM-65 | RC or Precast Chamber Construction for Potable Water Network Zone 3 |  | 2026-11-18 → 2026-11-25 (+7d) | 24.5d → 18.5d |
| MOD-PWN-FM-75 | Flowmeter Installation & Pipe Integration for Potable Water Network Zone 3 |  | 2026-12-16 → 2026-12-23 (+7d) | 5.35d → -0.65d |

| ID | Task | Start | Finish | Complete | Total float |
| --- | --- | --- | --- | --- | --- |
| MOD-PWN-FM-85 | Wiring/Cabling if applicable for Potable Water Network Zone 3 |  | 2026-12-22 → 2026-12-29 (+7d) |  | 5.35d → -0.65d |
| MOD-PWN-FM-95 | Calibration & Commissioning for Potable Water Network Zone 3 | 2026-12-22 → 2026-12-29 (+7d) | 2026-12-26 → 2027-01-02 (+7d) |  | 5.35d → -0.65d |
| 4 | **Washout & Air Valve Chambers** |  | 2026-11-19 → 2026-11-26 (+7d) |  |  |
| MOD-PWN-WA-87 | RC Blinding + Base + Walls for Potable Water Network Zone 3 |  | 2026-11-14 → 2026-11-21 (+7d) |  | 36.25d → 30.25d |
| MOD-PWN-WA-97 | Pipe Work for Potable Water Network Zone 3 |  | 2026-11-15 → 2026-11-22 (+7d) | 90% → 94% | 36.25d → 30.25d |
| MOD-PWN-WA-107 | Washout (Valve + Outlet) Installation for Potable Water Network Zone 3 |  | 2026-11-16 → 2026-11-23 (+7d) |  | 36.25d → 30.25d |
| MOD-PWN-WA-117 | Air Valve Rooms (Valve + Outlet) Installation for Potable Water Network Zone 3 |  | 2026-11-16 → 2026-11-23 (+7d) | 90% → 92% | 36.25d → 30.25d |
| MOD-PWN-WA-127 | Covers, Ladders & Tags for Potable Water Network Zone 3 |  | 2026-11-17 → 2026-11-24 (+7d) | 89% → 90% | 36.25d → 30.25d |
| MOD-PWN-WA-137 | Backfilling & Final Finishing for Potable Water Network Zone 3 | 2026-11-17 → 2026-11-24 (+7d) | 2026-11-19 → 2026-11-26 (+7d) |  | 36.25d → 30.25d |
| 5 | **Pumping Station (Structure & Civil Works)** | 2026-11-14 → 2026-11-21 (+7d) | 2027-01-28 → 2027-02-04 (+7d) |  |  |
| MOD-PWN-PS-66 | Excavation & Blinding for Potable Water Network Zone 3 | 2026-11-14 → 2026-11-21 (+7d) | 2026-11-24 → 2026-12-01 (+7d) |  | -27.8d → -33.8d |
| MOD-PWN-PS-76 | Reinforced Concrete/GRP Shell Construction for Potable Water Network Zone 3 | 2026-11-25 → 2026-12-02 (+7d) | 2026-12-03 → 2026-12-10 (+7d) |  | -27.8d → -33.8d |
| MOD-PWN-PS-86 | Access Ladders, Tight Cover, Surface Guttering for Potable Water Network Zone 3 | 2026-12-05 → 2026-12-12 (+7d) | 2026-12-09 → 2026-12-16 (+7d) |  | -27.8d → -33.8d |
| MOD-PWN-PS-96 | Internal piping & embedded sleeves for Potable Water Network Zone 3 | 2026-12-10 → 2026-12-17 (+7d) | 2026-12-24 → 2026-12-31 (+7d) |  | -27.8d → -33.8d |
| MOD-PWN-PS-106 | Pump Base Pads + Grouting for Potable Water Network Zone 3 | 2026-12-26 → 2027-01-02 (+7d) | 2027-01-09 → 2027-01-16 (+7d) |  | -24.6d → -30.6d |
| MOD-PWN-PS-116 | Backfilling & External Finishes for Potable Water Network Zone 3 | 2027-01-10 → 2027-01-17 (+7d) | 2027-01-28 → 2027-02-04 (+7d) |  | -24.6d → -30.6d |
| 6 | **Pump Station Building** | 2026-12-26 → 2027-01-02 (+7d) | 2027-01-30 → 2027-02-06 (+7d) |  |  |
| MOD-PWN-PB-33 | Structure Construction (as per architectural drawings) for Potable Water Network Zone 3 | 2026-12-26 → 2027-01-02 (+7d) | 2027-01-09 → 2027-01-16 (+7d) |  | -27.8d → -33.8d |
| MOD-PWN-PB-43 | 5-ton Hoist Installation for Potable Water Network Zone 3 | 2027-01-10 → 2027-01-17 (+7d) | 2027-01-14 → 2027-01-21 (+7d) |  | -27.8d → -33.8d |
| MOD-PWN-PB-53 | Finishes, Doors, Ventilation for Potable Water Network Zone 3 | 2027-01-16 → 2027-01-23 (+7d) | 2027-01-30 → 2027-02-06 (+7d) |  | -27.8d → -33.8d |
| 7 | **Pumping Equipment & Fire Systems** |  | 2027-01-21 → 2027-01-28 (+7d) |  |  |
| MOD-PWN-PE-88 | Main Pumps (250 kW, 295 L/s @ 60 m head) for Potable Water Network Zone 3 |  | 2027-01-06 → 2027-01-13 (+7d) |  | -19.1d → -25.1d |
| MOD-PWN-PE-98 | Electric Fire Water Pump (64 L/s @ 60 m) for Potable Water Network Zone 3 |  | 2027-01-13 → 2027-01-20 (+7d) |  | -18.1d → -24.1d |
| MOD-PWN-PE-108 | Diesel Fire Water Pump (64 L/s @ 60 m) for Potable Water Network Zone 3 |  | 2027-01-11 → 2027-01-18 (+7d) |  | -18.1d → -24.1d |
| MOD-PWN-PE-118 | Electric Jockey Pump for Potable Water Network Zone 3 |  | 2027-01-11 → 2027-01-18 (+7d) |  | -18.1d → -24.1d |
| MOD-PWN-PE-128 | Submersible Fire Pumps (2 pcs, 10 L/s @ 10 m) for Potable Water Network Zone 3 |  | 2027-01-10 → 2027-01-17 (+7d) |  | -18.1d → -24.1d |
| MOD-PWN-PE-138 | Pipework connections within Pump Room for Potable Water Network Zone 3 | 2027-01-10 → 2027-01-17 (+7d) | 2027-01-16 → 2027-01-23 (+7d) |  | -18.1d → -24.1d |
| MOD-PWN-PE-148 | MCC & DB panel installation for Potable Water Network Zone 3 | 2027-01-16 → 2027-01-23 (+7d) | 2027-01-18 → 2027-01-25 (+7d) |  | -18.1d → -24.1d |
| MOD-PWN-PE-158 | Flow meter on 800mm pipe including flow meter chamber and 2-2.5m depth for Potable Water Network Zone 3 | 2027-01-18 → 2027-01-25 (+7d) | 2027-01-21 → 2027-01-28 (+7d) |  | -18.1d → -24.1d |
| 8 | **Surge Protection** | 2027-01-16 → 2027-01-23 (+7d) | 2027-01-21 → 2027-01-28 (+7d) |  |  |
| MOD-PWN-SP-22 | Surge Vessel Installation for Potable Water Network Zone 3 | 2027-01-16 → 2027-01-23 (+7d) | 2027-01-20 → 2027-01-27 (+7d) |  | -18.1d → -24.1d |
| MOD-PWN-SP-32 | Pipe Integration as per Surge Analysis for Potable Water Network Zone 3 | 2027-01-20 → 2027-01-27 (+7d) | 2027-01-21 → 2027-01-28 (+7d) |  | -18.1d → -24.1d |
| 9 | **Power & Generator System** | 2027-01-06 → 2027-01-13 (+7d) | 2027-01-20 → 2027-01-27 (+7d) |  |  |
| MOD-PWN-PG-44 | 500 kVA Standby Generator Installation for Potable Water Network Zone 3 | 2027-01-06 → 2027-01-13 (+7d) | 2027-01-11 → 2027-01-18 (+7d) |  | -17.1d → -23.1d |
| MOD-PWN-PG-54 | Canopy, Foundation & Fuel Tank for Potable Water Network Zone 3 | 2027-01-06 → 2027-01-13 (+7d) | 2027-01-13 → 2027-01-20 (+7d) |  | -17.1d → -23.1d |
| MOD-PWN-PG-64 | Electrical Cabling, Circuit Breakers for Potable Water Network Zone 3 | 2027-01-13 → 2027-01-20 (+7d) | 2027-01-18 → 2027-01-25 (+7d) |  | -17.1d → -23.1d |
| MOD-PWN-PG-74 | Earthing & Commissioning for Potable Water Network Zone 3 | 2027-01-18 → 2027-01-25 (+7d) | 2027-01-20 → 2027-01-27 (+7d) |  | -17.1d → -23.1d |
| 10 | **Chlorination System** | 2027-01-10 → 2027-01-17 (+7d) | 2027-01-25 → 2027-02-01 (+7d) |  |  |
| MOD-PWN-CS-33 | Chlorination Device Supply & Installation for Potable Water Network Zone 3 | 2027-01-10 → 2027-01-17 (+7d) | 2027-01-17 → 2027-01-24 (+7d) |  | -21.6d → -27.6d |
| MOD-PWN-CS-43 | Connections to Main Line or Disinfection Chamber for Potable Water Network Zone 3 | 2027-01-18 → 2027-01-25 (+7d) | 2027-01-21 → 2027-01-28 (+7d) |  | -21.6d → -27.6d |
| MOD-PWN-CS-53 | Control Integration for Potable Water Network Zone 3 | 2027-01-23 → 2027-01-30 (+7d) | 2027-01-25 → 2027-02-01 (+7d) |  | -21.6d → -27.6d |
| 11 | **Water Storage System** |  | 2027-02-02 → 2027-02-10 (+8d) |  |  |
| MOD-PWN-WS-11 | Structural tanks for supply or pressure equalization for Potable Water Network Zone 3 |  | 2027-02-02 → 2027-02-10 (+8d) |  | -27.8d → -33.8d |
| 12 | **Street Lighting** |  | 2027-01-17 → 2027-01-24 (+7d) |  |  |
| MOD-PWN-SL-75 | Pole & Fixture Installation for Potable Water Network Zone 3 |  | 2027-01-10 → 2027-01-17 (+7d) |  | -13.76d → -19.76d |
| MOD-PWN-SL-65 | Conduits, Cabling, Backfilling for Potable Water Network Zone 3 |  | 2027-01-10 → 2027-01-17 (+7d) |  | -13.76d → -19.76d |
| MOD-PWN-SL-85 | Connection to Main Supply for Potable Water Network Zone 3 | 2027-01-10 → 2027-01-17 (+7d) | 2027-01-17 → 2027-01-24 (+7d) |  | -13.76d → -19.76d |
| MOD-PWN-SL-95 | Testing & Lighting Commissioning for Potable Water Network Zone 3 | 2027-01-10 → 2027-01-17 (+7d) | 2027-01-17 → 2027-01-24 (+7d) |  | -13.76d → -19.76d |
| 6 | **Irrigation Network Zone 3** |  | 2026-12-20 → 2026-12-27 (+7d) |  |  |
| 1 | **Excavation, Pipe Laying & Backfilling** |  | 2026-11-20 → 2026-11-24 (+4d) |  |  |
| MOD-IRN-EB-120 | Trench Excavation for Irrigation Network Zone 3 |  | 2026-11-16 → 2026-11-22 (+6d) |  | 40.48d → 36.35d |
| MOD-IRN-EB-130 | Lean Concrete / Pipe Bedding with Type B Material for Irrigation Network Zone 3 |  | 2026-11-16 → 2026-11-22 (+6d) |  | 40.48d → 36.35d |
| MOD-IRN-EB-140 | HDPE Pipe Laying (125 mm to 630 mm) for Irrigation Network Zone 3 |  | 2026-11-19 → 2026-11-23 (+4d) |  | 40.48d → 36.35d |
| MOD-IRN-EB-150 | Test (Pressure-slope) for Irrigation Network Zone 3 |  | 2026-11-19 → 2026-11-23 (+4d) |  | 40.48d → 36.35d |
| MOD-IRN-EB-180 | Coating / Wrapping for Irrigation Network Zone 3 |  | 2026-11-19 → 2026-11-23 (+4d) |  | 40.48d → 36.35d |
| MOD-IRN-EB-190 | Backfilling & Warrning Tape for Irrigation Network Zone 3 |  | 2026-11-20 → 2026-11-24 (+4d) |  | 40.48d → 36.35d |
| 2 | **Valves and Appurtenances** |  | 2026-11-16 → 2026-11-23 (+7d) |  |  |
| MOD-IRN-VA-65 | Supply & Installation of Valves (Butterfly Valve) for Irrigation Network Zone 3 |  | 2026-11-15 → 2026-11-22 (+7d) |  | 38.85d → 32.85d |
| MOD-IRN-VA-75 | Installation of Flanges, Bolts, Collars, Nuts for Irrigation Network Zone 3 |  | 2026-11-15 → 2026-11-22 (+7d) |  | 38.85d → 32.85d |
| MOD-IRN-VA-85 | Valve Pressure Testing for Irrigation Network Zone 3 |  | 2026-11-15 → 2026-11-22 (+7d) |  | 38.85d → 32.85d |
| MOD-IRN-VA-95 | Support Brackets/Anchor Blocks for Irrigation Network Zone 3 |  | 2026-11-16 → 2026-11-23 (+7d) |  | 38.85d → 32.85d |
| 3 | **Valve Rooms** |  | 2026-11-14 → 2026-11-21 (+7d) |  |  |
| MOD-IRN-VR-137 | Backfilling and Finishing Valve Chamber for Irrigation Network Zone 3 |  | 2026-11-14 → 2026-11-21 (+7d) |  | 41.1d → 35.1d |
| 4 | **Washout Chambers** |  | 2026-11-15 → 2026-11-22 (+7d) |  |  |
| MOD-IRN-WC-96 | Washout Valve & Pipe Connection Washout Chamber for Irrigation Network Zone 3 |  | 2026-11-14 → 2026-11-21 (+7d) |  | 40.1d → 34.1d |
| MOD-IRN-WC-106 | Manhole Frame, Cover & Ladder Fixing Washout Chamber for Irrigation Network Zone 3 |  | 2026-11-14 → 2026-11-21 (+7d) |  | 40.1d → 34.1d |
| MOD-IRN-WC-116 | Backfilling & Reinstatement Washout Chamber for Irrigation Network Zone 3 |  | 2026-11-15 → 2026-11-22 (+7d) |  | 40.1d → 34.1d |
| 5 | **Air Valve Chambers** |  | 2026-11-14 → 2026-11-21 (+7d) |  |  |
| MOD-IRN-AC-95 | Cover Fixing & Finishing Air Valve Chamber for Irrigation Network Zone 3 |  | 2026-11-14 → 2026-11-21 A (+7d) | 95% → 100% | 41.3d → none |
| 6 | **Flow Meter Chambers** |  | 2026-12-20 → 2026-12-27 (+7d) |  |  |

| ID | Task | Start | Finish | Total float |
| --- | --- | --- | --- | --- |
| MOD-IRN-FC-76 | RCC Base & Wall Construction Flow Meter Chamber for Irrigation Network Zone 3 |  | 2026-11-14 → 2026-11-21 (+7d) | 32d → 26d |
| MOD-IRN-FC-86 | Flow Meter Installation (280, 300, 500 mm) Flow Meter Chamber for Irrigation Network Zone 3 |  | 2026-12-12 → 2026-12-19 (+7d) | 9.55d → 3.55d |
| MOD-IRN-FC-96 | Integration with Pipework Flow Meter Chamber for Irrigation Network Zone 3 |  | 2026-12-13 → 2026-12-20 (+7d) | 9.55d → 3.55d |
| MOD-IRN-FC-106 | Testing & Calibration Flow Meter Chamber for Irrigation Network Zone 3 |  | 2026-12-15 → 2026-12-22 (+7d) | 9.55d → 3.55d |
| MOD-IRN-FC-116 | Cover and Access Arrangement Flow Meter Chamber for Irrigation Network Zone 3 | 2026-12-15 → 2026-12-22 (+7d) | 2026-12-20 → 2026-12-27 (+7d) | 9.55d → 3.55d |
| 7 | **Rainwater Collection Ponds Zone 3** |  | 2027-03-27 → 2027-04-01 (+5d) |  |
| 10 | **Excavation for Rainwater Drainage Pond** |  | 2027-01-16 → 2027-01-20 (+4d) |  |
| 11 | **Deep excavation, backfill, disposal for pond formation** |  | 2027-01-16 → 2027-01-20 (+4d) |  |
| MOD-RCP-ER-88 | Excavate in layers to final depth for Rainwater Collection Ponds Zone 3 |  | 2027-01-09 → 2027-01-16 (+7d) | 85.8d → 81.64d |
| MOD-RCP-ER-98 | Dewater during excavation for Rainwater Collection Ponds Zone 3 |  | 2027-01-10 → 2027-01-17 (+7d) | 85.8d → 81.64d |
| MOD-RCP-ER-108 | Place warning tapes for Rainwater Collection Ponds Zone 3 |  | 2027-01-11 → 2027-01-17 (+6d) | 85.8d → 81.64d |
| MOD-RCP-ER-118 | Dispose of rock/materials to approved dump area for Rainwater Collection Ponds Zone 3 |  | 2027-01-13 → 2027-01-18 (+5d) | 85.8d → 81.64d |
| MOD-RCP-ER-128 | Backfill selected areas as per design for Rainwater Collection Ponds Zone 3 |  | 2027-01-13 → 2027-01-18 (+5d) | 85.8d → 81.64d |
| MOD-RCP-ER-138 | Final trimming and profiling for Rainwater Collection Ponds Zone 3 | 2027-01-13 → 2027-01-18 (+5d) | 2027-01-16 → 2027-01-20 (+4d) | 85.8d → 81.64d |
| 1 | **General Site Preparation** |  | 2027-01-12 → 2027-01-19 (+7d) |  |
| MOD-RCP-GS-183 | Earthwork excavation (other than topsoil or rock) - Zone 3 (3 Ponds) for Rainwater Collection Ponds Zone 3 |  | 2027-01-10 → 2027-01-17 (+7d) | 26.35d → 20.65d |
| MOD-RCP-GS-193 | Transport and disposal to approved locations - Zone 3 (3 Ponds) for Rainwater Collection Ponds Zone 3 |  | 2027-01-12 → 2027-01-19 (+7d) | 41.6d → 36.35d |
| 2 | **Backfilling Works** |  | 2027-01-25 → 2027-01-30 (+5d) |  |
| MOD-RCP-BW-75 | Compact each layer to required density for Rainwater Collection Ponds Zone 3 |  | 2027-01-19 → 2027-01-24 (+5d) | 77.8d → 73.9d |
| MOD-RCP-BW-65 | Place in layers not exceeding 300mm for Rainwater Collection Ponds Zone 3 |  | 2027-01-17 → 2027-01-23 (+6d) | 77.8d → 73.9d |
| MOD-RCP-BW-55 | Select material from excavation or import approved material for Rainwater Collection Ponds Zone 3 |  | 2027-01-14 → 2027-01-20 (+6d) | 41.6d → 36.35d |
| MOD-RCP-BW-85 | Conduct field density tests for Rainwater Collection Ponds Zone 3 |  | 2027-01-19 → 2027-01-24 (+5d) | 77.8d → 73.9d |
| MOD-RCP-BW-95 | Final leveling and approval for Rainwater Collection Ponds Zone 3 | 2027-01-19 → 2027-01-24 (+5d) | 2027-01-25 → 2027-01-30 (+5d) | 77.8d → 73.9d |
| 12 | **Geotextile & Bedding** |  | 2027-03-27 → 2027-04-01 (+5d) |  |
| 13 | **Installation of geotextile lining and coarse sand bedding** |  | 2027-03-27 → 2027-04-01 (+5d) |  |
| MOD-RCP-GB-45 | Trim subgrade to required level for Rainwater Collection Ponds Zone 3 |  | 2027-01-16 → 2027-01-21 (+5d) | 41.6d → 36.35d |
| MOD-RCP-GB-55 | Lay HDPE geotextile membrane over compacted soil for Rainwater Collection Ponds Zone 3 |  | 2027-01-23 → 2027-01-30 (+7d) | 41.6d → 36.35d |
| MOD-RCP-GB-65 | Place 500mm thick coarse sand bedding for Rainwater Collection Ponds Zone 3 | 2027-01-24 → 2027-01-30 (+6d) | 2027-02-24 → 2027-03-07 (+11d) | 41.6d → 36.35d |
| MOD-RCP-GB-75 | Compact and level bedding for Rainwater Collection Ponds Zone 3 | 2027-02-25 → 2027-03-07 (+10d) | 2027-03-27 → 2027-04-01 (+5d) | 41.6d → 36.35d |
| 8 | **Road Crossing Zone 3** |  | 2027-07-07 → 2027-07-14 (+7d) |  |
| 14 | **uPVC Road Crossing Pipes** |  | 2027-03-08 → 2027-03-20 (+12d) |  |
| 15 | **Installation of uPVC pipes of various diameters crossing roadways** |  | 2027-03-08 → 2027-03-20 (+12d) |  |
| MOD-ROC-PV-005 | Preparation of trench base with compacted bedding for Road Crossing Zone 3 |  | 2027-01-17 → 2027-01-24 (+7d) | -140.66d → -146.66d |
| MOD-ROC-PV-006 | Laying of uPVC pipe (300mm, 315mm, 400mm, 600mm dia) for Road Crossing Zone 3 |  | 2027-01-23 → 2027-01-30 (+7d) | -140.66d → -146.66d |
| MOD-ROC-PV-004 | Excavation across road width to required depth for Road Crossing Zone 3 |  | 2027-01-12 → 2027-01-19 (+7d) | -140.66d → -146.66d |
| MOD-ROC-PV-007 | Placement of supports and protection around the pipe for Road Crossing Zone 3 | 2027-01-23 → 2027-01-30 (+7d) | 2027-01-28 → 2027-02-04 (+7d) | -140.66d → -146.66d |
| MOD-ROC-PV-008 | Testing of installed pipeline for Road Crossing Zone 3 | 2027-01-28 → 2027-02-04 (+7d) | 2027-02-04 → 2027-02-15 (+11d) | -140.66d → -146.66d |
| MOD-ROC-PV-009 | Backfilling and compaction in layers for Road Crossing Zone 3 | 2027-02-04 → 2027-02-15 (+11d) | 2027-02-24 → 2027-03-08 (+12d) | -140.66d → -146.66d |
| MOD-ROC-PV-010 | Reinstatement of road surface for Road Crossing Zone 3 | 2027-02-24 → 2027-03-08 (+12d) | 2027-03-08 → 2027-03-20 (+12d) | -140.66d → -146.66d |
| 16 | **GRP Road Crossing Pipes** | 2027-03-08 → 2027-03-21 (+13d) | 2027-07-07 → 2027-07-14 (+7d) |  |
| 17 | **Installation of GRP pipes (800mm–1000mm dia) for road crossings** | 2027-03-08 → 2027-03-21 (+13d) | 2027-07-07 → 2027-07-14 (+7d) |  |
| MOD-ROC-GR-002 | Set out location and coordinate with road authority for Road Crossing Zone 3 | 2027-03-08 → 2027-03-21 (+13d) | 2027-03-18 → 2027-03-25 (+7d) | -43d → -49d |
| MOD-ROC-GR-003 | Excavate trench across road at designed depth for Road Crossing Zone 3 | 2027-03-20 → 2027-03-27 (+7d) | 2027-04-01 → 2027-04-08 (+7d) | -43d → -49d |
| MOD-ROC-GR-004 | Lay compacted granular bedding for Road Crossing Zone 3 | 2027-04-03 → 2027-04-10 (+7d) | 2027-04-20 → 2027-04-27 (+7d) | -43d → -49d |
| MOD-ROC-GR-005 | Install GRP pipe (800mm & 1000mm dia) for Road Crossing Zone 3 | 2027-04-21 → 2027-04-28 (+7d) | 2027-05-19 → 2027-05-26 (+7d) | -43d → -49d |
| MOD-ROC-GR-006 | Provide structural supports and closure at both ends for Road Crossing Zone 3 | 2027-05-20 → 2027-05-27 (+7d) | 2027-05-30 → 2027-06-06 (+7d) | -43d → -49d |
| MOD-ROC-GR-007 | Perform leak testing as per specifications for Road Crossing Zone 3 | 2027-05-31 → 2027-06-07 (+7d) | 2027-06-05 → 2027-06-12 (+7d) | -43d → -49d |
| MOD-ROC-GR-008 | Backfill and compact in layers for Road Crossing Zone 3 | 2027-06-06 → 2027-06-13 (+7d) | 2027-06-22 → 2027-06-29 (+7d) | -43d → -49d |
| MOD-ROC-GR-009 | Reinstate road surface (asphalt/concrete) for Road Crossing Zone 3 | 2027-06-23 → 2027-06-30 (+7d) | 2027-07-01 → 2027-07-08 (+7d) | -43d → -49d |
| MOD-ROC-GR-010 | Final inspection and approval by relevant authority for Road Crossing Zone 3 | 2027-07-03 → 2027-07-10 (+7d) | 2027-07-07 → 2027-07-14 (+7d) | -43d → -49d |
| 8 | **Zone 2** |  | 2027-08-09 → 2027-08-16 (+7d) |  |
| 5 | **Sewerage Network Zone 2** |  | 2027-01-18 → 2027-01-23 (+5d) |  |
| 1 | **Pipework: Supply, Installation, and Testing** |  | 2027-01-06 → 2027-01-13 (+7d) |  |
| 3 | **HDPE Pressure Pipes Installation (250mm–630mm)** |  | 2027-01-06 → 2027-01-13 (+7d) |  |
| MOD-SWN-PW-585 | Excavation and Trenching HDPE for Sewerage Network Zone 2 |  | 2026-11-18 → 2026-11-25 (+7d) | 52.1d → 45.1d |
| MOD-SWN-PW-595 | Lean Concrete / Bedding HDPE for Sewerage Network Zone 2 |  | 2026-11-26 → 2026-12-03 (+7d) | 52.1d → 45.1d |
| MOD-SWN-PW-465 | HDPE Pressure Pipes Installation (250mm–630mm) HDPE for Sewerage Network Zone 2 |  | 2026-12-07 → 2026-12-14 (+7d) | 52.1d → 45.1d |
| MOD-SWN-PW-605 | Test (Pressure - Slope) HDPE for Sewerage Network Zone 2 |  | 2026-12-14 → 2026-12-21 (+7d) | 70.7d → 63.7d |
| MOD-SWN-PW-615 | Coating / Wrapping HDPE for Sewerage Network Zone 2 |  | 2026-12-22 → 2026-12-29 (+7d) | 70.7d → 63.7d |
| MOD-SWN-PW-575 | Backfilling & Warrning Tape HDPE for Sewerage Network Zone 2 | 2026-12-23 → 2026-12-30 (+7d) | 2027-01-06 → 2027-01-13 (+7d) | 70.7d → 63.7d |
| 2 | **Fittings and Valves** | 2026-12-07 → 2026-12-14 (+7d) | 2027-01-07 → 2027-01-14 (+7d) |  |
| MOD-SWN-FV-5 | Supply & Installation of HDPE Elbows for Sewerage Network Zone 2 | 2026-12-07 → 2026-12-14 (+7d) | 2026-12-14 → 2026-12-21 (+7d) | 45.1d → 39.1d |
| MOD-SWN-FV-15 | Gate Valves Installation for Sewerage Network Zone 2 | 2026-12-14 → 2026-12-21 (+7d) | 2026-12-19 → 2026-12-26 (+7d) | 45.1d → 39.1d |
| MOD-SWN-FV-25 | Drain Valves Installation for Sewerage Network Zone 2 | 2026-12-19 → 2026-12-26 (+7d) | 2026-12-23 → 2026-12-30 (+7d) | 45.1d → 39.1d |
| MOD-SWN-FV-35 | Air Breather & Air Release Valves Installation for Sewerage Network Zone 2 | 2026-12-23 → 2026-12-30 (+7d) | 2027-01-04 → 2027-01-11 (+7d) | 45.1d → 39.1d |
| MOD-SWN-FV-45 | Jointing & Piping Accessories Installation for Sewerage Network Zone 2 | 2027-01-04 → 2027-01-11 (+7d) | 2027-01-07 → 2027-01-14 (+7d) | 45.1d → 39.1d |
| 3 | **Valve & Flow Meter Chambers** |  | 2027-01-18 → 2027-01-23 (+5d) |  |
| 1 | **Valve Chambers Construction** |  | 2026-12-28 → 2027-01-04 (+7d) |  |
| MOD-SWN-PW-975 | Excavation Valve Chamber for Sewerage Network Zone 2 |  | 2026-11-17 → 2026-11-24 (+7d) | 59.66d → 54.56d |
| MOD-SWN-PW-985 | Lean Concrete / Bedding Valve Chamber for Sewerage Network Zone 2 |  | 2026-11-25 → 2026-12-02 (+7d) | 59.66d → 54.56d |

| ID | Task | Start | Finish | Total float |
| --- | --- | --- | --- | --- |
| MOD-SWN-VF-124 | Valve Chambers Construction Valve Chamber for Sewerage Network Zone 2 |  | 2026-11-28 → 2026-12-05 (+7d) | 59.66d → 54.56d |
| MOD-SWN-PW-995 | Test Valve Chamber for Sewerage Network Zone 2 | 2026-11-28 → 2026-12-05 (+7d) | 2026-12-13 → 2026-12-20 (+7d) | 80.27d → 73.27d |
| MOD-SWN-PW-965 | Backfilling Valve Chamber for Sewerage Network Zone 2 | 2026-12-13 → 2026-12-20 (+7d) | 2026-12-28 → 2027-01-04 (+7d) | 80.27d → 73.27d |
| 2 | **Water Drain Chambers Construction** |  | 2027-01-06 → 2027-01-12 (+6d) |  |
| MOD-SWN-PW-1015 | Excavation Water Drain Chamber for Sewerage Network Zone 2 |  | 2026-11-18 → 2026-11-25 (+7d) | 61.49d → 58.49d |
| MOD-SWN-PW-1025 | Lean Concrete / Bedding Water Drain Chamber for Sewerage Network Zone 2 |  | 2026-11-26 → 2026-12-01 (+5d) | 61.49d → 58.49d |
| MOD-SWN-VF-134 | Water Drain Chambers Construction Water Drain Chamber for Sewerage Network Zone 2 |  | 2026-12-07 → 2026-12-13 (+6d) | 59.66d → 54.56d |
| MOD-SWN-PW-1035 | Test Water Drain Chamber for Sewerage Network Zone 2 | 2026-12-07 → 2026-12-13 (+6d) | 2026-12-22 → 2026-12-28 (+6d) | 70.77d → 65.67d |
| MOD-SWN-PW-1005 | Backfilling Water Drain Chamber for Sewerage Network Zone 2 | 2026-12-22 → 2026-12-28 (+6d) | 2027-01-06 → 2027-01-12 (+6d) | 70.77d → 65.67d |
| 3 | **Discharge Chambers Construction** |  | 2027-01-13 → 2027-01-18 (+5d) |  |
| MOD-SWN-PW-1055 | Excavation Discharge Chamber for Sewerage Network Zone 2 |  | 2026-11-22 → 2026-11-29 (+7d) | 65.74d → 58.74d |
| MOD-SWN-PW-1065 | Lean Concrete / Bedding Discharge Chamber for Sewerage Network Zone 2 |  | 2026-12-01 → 2026-12-08 (+7d) | 65.74d → 58.74d |
| MOD-SWN-VF-144 | Discharge Chambers Construction Discharge Chamber for Sewerage Network Zone 2 |  | 2026-12-14 → 2026-12-19 (+5d) | 59.66d → 54.56d |
| MOD-SWN-PW-1075 | Test Discharge Chamber for Sewerage Network Zone 2 | 2026-12-14 → 2026-12-19 (+5d) | 2026-12-29 → 2027-01-03 (+5d) | 64.66d → 59.56d |
| MOD-SWN-PW-1045 | Backfilling Discharge Chamber for Sewerage Network Zone 2 | 2026-12-29 → 2027-01-03 (+5d) | 2027-01-13 → 2027-01-18 (+5d) | 64.66d → 59.56d |
| 4 | **Flow Meter Chambers Construction** |  | 2027-01-18 → 2027-01-23 (+5d) |  |
| MOD-SWN-PW-1095 | Excavation Flow Meter Chamber for Sewerage Network Zone 2 |  | 2026-11-22 → 2026-11-29 (+7d) | 68.7d → 61.7d |
| MOD-SWN-PW-1105 | Lean Concrete / Bedding Flow Meter Chamber for Sewerage Network Zone 2 |  | 2026-12-04 → 2026-12-11 (+7d) | 68.7d → 61.7d |
| MOD-SWN-VF-154 | Flow Meter Chambers Construction Flow Meter Chamber for Sewerage Network Zone 2 | 2026-12-14 → 2026-12-19 (+5d) | 2026-12-19 → 2026-12-24 (+5d) | 59.66d → 54.56d |
| MOD-SWN-PW-1115 | Test Flow Meter Chamber for Sewerage Network Zone 2 | 2026-12-19 → 2026-12-24 (+5d) | 2027-01-03 → 2027-01-08 (+5d) | 59.66d → 54.56d |
| MOD-SWN-PW-1085 | Backfilling Flow Meter Chamber for Sewerage Network Zone 2 | 2027-01-03 → 2027-01-08 (+5d) | 2027-01-18 → 2027-01-23 (+5d) | 59.66d → 54.56d |
| 4 | **Manholes** |  | 2026-12-23 → 2026-12-30 (+7d) |  |
| 1 | **1200mm GRP Manholes with Backdrop** |  | 2026-12-14 → 2026-12-21 (+7d) |  |
| MOD-SWN-PW-1455 | Excavation 1.2m GRP for Sewerage Network Zone 2 |  | 2026-11-15 → 2026-11-22 (+7d) | 85.02d → 78.02d |
| MOD-SWN-PW-1465 | Lean Concrete / Bedding 1.2m GRP for Sewerage Network Zone 2 |  | 2026-11-17 → 2026-11-24 (+7d) | 85.02d → 78.02d |
| MOD-SWN-MH-145 | 1200mm GRP Manholes with Backdrop 1.2m GRP for Sewerage Network Zone 2 |  | 2026-11-19 → 2026-11-26 (+7d) | 85.02d → 78.02d |
| MOD-SWN-PW-1445 | Backfilling 1.2m GRP for Sewerage Network Zone 2 |  | 2026-12-14 → 2026-12-21 (+7d) | 94.37d → 87.37d |
| MOD-SWN-PW-1475 | Test 1.2m GRP for Sewerage Network Zone 2 | 2026-11-19 → 2026-11-26 (+7d) | 2026-12-04 → 2026-12-11 (+7d) | 94.37d → 87.37d |
| 2 | **1500mm GRP Manholes (Standard & Backdrop)** |  | 2026-12-16 → 2026-12-23 (+7d) |  |
| MOD-SWN-PW-1495 | Excavation 1.5m GRP for Sewerage Network Zone 2 |  | 2026-11-16 → 2026-11-23 (+7d) | 86.7d → 79.7d |
| MOD-SWN-PW-1505 | Lean Concrete / Bedding 1.5m GRP for Sewerage Network Zone 2 |  | 2026-11-18 → 2026-11-25 (+7d) | 86.7d → 79.7d |
| MOD-SWN-MH-155 | 1500mm GRP Manholes (Standard & Backdrop) 1.5m GRP for Sewerage Network Zone 2 |  | 2026-11-21 → 2026-11-28 (+7d) | 85.02d → 78.02d |
| MOD-SWN-PW-1485 | Backfilling 1.5m GRP for Sewerage Network Zone 2 |  | 2026-12-16 → 2026-12-23 (+7d) | 92.27d → 85.27d |
| MOD-SWN-PW-1515 | Test 1.5m GRP for Sewerage Network Zone 2 | 2026-11-21 → 2026-11-28 (+7d) | 2026-12-06 → 2026-12-13 (+7d) | 92.27d → 85.27d |
| 3 | **1800mm GRP Manholes (Standard & Backdrop)** |  | 2026-12-23 → 2026-12-30 (+7d) |  |
| MOD-SWN-PW-1535 | Excavation 1.8m GRP for Sewerage Network Zone 2 |  | 2026-11-15 → 2026-11-22 (+7d) | 90.06d → 83.06d |
| MOD-SWN-PW-1545 | Lean Concrete / Bedding 1.8m GRP for Sewerage Network Zone 2 |  | 2026-11-16 → 2026-11-23 (+7d) | 90.06d → 83.06d |
| MOD-SWN-MH-165 | 1800mm GRP Manholes (Standard & Backdrop) 1.8m GRP for Sewerage Network Zone 2 |  | 2026-11-23 → 2026-11-30 (+7d) | 85.02d → 78.02d |
| MOD-SWN-PW-1555 | Test 1.8m GRP for Sewerage Network Zone 2 | 2026-11-23 → 2026-11-30 (+7d) | 2026-12-08 → 2026-12-15 (+7d) | 85.02d → 78.02d |
| MOD-SWN-PW-1525 | Backfilling 1.8m GRP for Sewerage Network Zone 2 | 2026-12-08 → 2026-12-15 (+7d) | 2026-12-23 → 2026-12-30 (+7d) | 85.02d → 78.02d |
| 4 | **2000mm GRP Manholes (Standard & Backdrop)** |  | 2026-12-18 → 2026-12-25 (+7d) |  |
| MOD-SWN-PW-1575 | Excavation 2m GRP for Sewerage Network Zone 2 |  | 2026-11-15 → 2026-11-22 (+7d) | 96.08d → 89.08d |
| MOD-SWN-PW-1585 | Lean Concrete / Bedding 2m GRP for Sewerage Network Zone 2 |  | 2026-11-17 → 2026-11-24 (+7d) | 96.08d → 89.08d |
| MOD-SWN-MH-175 | 2000mm GRP Manholes (Standard & Backdrop) 2m GRP for Sewerage Network Zone 2 |  | 2026-11-24 → 2026-12-01 (+7d) | 89.97d → 82.97d |
| MOD-SWN-PW-1565 | Backfilling 2m GRP for Sewerage Network Zone 2 |  | 2026-12-18 → 2026-12-25 (+7d) | 89.97d → 82.97d |
| MOD-SWN-PW-1595 | Test 2m GRP for Sewerage Network Zone 2 | 2026-11-24 → 2026-12-01 (+7d) | 2026-12-09 → 2026-12-16 (+7d) | 89.97d → 82.97d |
| 6 | **Rainwater Drainage Network Zone 2** |  | 2026-12-21 → 2026-12-28 (+7d) |  |
| 1 | **Pipe Laying Works** |  | 2026-11-18 → 2026-11-25 (+7d) |  |
| 2 | **Supply & Installation of uPVC Pipes (250–300mm dia)** |  | 2026-11-15 → 2026-11-22 (+7d) |  |
| MOD-RWN-PL-753 | Laying of uPVC pipe UPVC for Rainwater Drainage Network Zone 2 |  | 2026-11-14 → 2026-11-21 (+7d) | -114.3d → -121.3d |
| MOD-RWN-PL-763 | Coating / Wrapping UPVC for Rainwater Drainage Network Zone 2 |  | 2026-11-14 → 2026-11-21 (+7d) | -110.6d → -117.6d |
| MOD-RWN-PL-773 | Test (Pressure-slope) UPVC for Rainwater Drainage Network Zone 2 |  | 2026-11-14 → 2026-11-21 (+7d) | -114.3d → -121.3d |
| MOD-RWN-PL-783 | Backfilling & Warning Tape UPVC for Rainwater Drainage Network Zone 2 |  | 2026-11-15 → 2026-11-22 (+7d) | -111.84d → -118.84d |
| 4 | **uPVC Connection Pipes (150mm dia)** |  | 2026-11-18 → 2026-11-25 (+7d) |  |
| MOD-RWN-PL-853 | Lean Concrete / bedding material UPVC Con. for Rainwater Drainage Network Zone 2 |  | 2026-11-14 → 2026-11-21 (+7d) | -114.26d → -121.26d |
| MOD-RWN-PL-863 | Lay & connect UPVC Con. for Rainwater Drainage Network Zone 2 |  | 2026-11-14 → 2026-11-21 (+7d) | -114.3d → -121.3d |
| MOD-RWN-PL-873 | Test (Pressure-slope) UPVC Con. for Rainwater Drainage Network Zone 2 |  | 2026-11-14 → 2026-11-21 (+7d) | -114.3d → -121.3d |
| MOD-RWN-PL-883 | Backfilling & compaction UPVC Con. for Rainwater Drainage Network Zone 2 |  | 2026-11-18 → 2026-11-25 (+7d) | -114.3d → -121.3d |
| MOD-RWN-PL-903 | Coating / Wrapping UPVC Con. for Rainwater Drainage Network Zone 2 |  | 2026-11-18 → 2026-11-25 (+7d) | -114.3d → -121.3d |
| 5 | **Precast Concrete Box Culverts** |  | 2026-12-21 → 2026-12-28 (+7d) |  |
| 1 | **Box Culverts (500x500mm to 3500x800mm)** |  | 2026-12-21 → 2026-12-28 (+7d) |  |
| MOD-RWN-PC-34 | Excavation to required depth Box culvert for Rainwater Drainage Network Zone 2 |  | 2026-11-15 → 2026-11-22 (+7d) | -125.99d → -131.99d |
| MOD-RWN-PC-44 | Dewatering and trench shoring Box culvert for Rainwater Drainage Network Zone 2 |  | 2026-11-17 → 2026-11-24 (+7d) | -125.99d → -131.99d |
| MOD-RWN-PC-54 | Bedding preparation (gravel/lean concrete) Box culvert for Rainwater Drainage Network Zone 2 |  | 2026-11-21 → 2026-11-28 (+7d) | -125.99d → -131.99d |
| MOD-RWN-PC-64 | Installation of box culvert units Box culvert for Rainwater Drainage Network Zone 2 | 2026-11-21 → 2026-11-28 (+7d) | 2026-11-26 → 2026-12-03 (+7d) | -125.99d → -131.99d |
| MOD-RWN-PC-74 | Alignment and joint sealing Box culvert for Rainwater Drainage Network Zone 2 | 2026-11-26 → 2026-12-03 (+7d) | 2026-12-01 → 2026-12-08 (+7d) | -125.61d → -131.61d |
| MOD-RWN-PC-84 | Construct headwalls/wing walls (if needed) Box culvert for Rainwater Drainage Network Zone 2 | 2026-12-01 → 2026-12-08 (+7d) | 2026-12-09 → 2026-12-16 (+7d) | -125.61d → -131.61d |
| MOD-RWN-PC-94 | Backfilling and compaction Box culvert for Rainwater Drainage Network Zone 2 | 2026-12-09 → 2026-12-16 (+7d) | 2026-12-16 → 2026-12-23 (+7d) | -125.61d → -131.61d |
| MOD-RWN-PC-104 | Surface finishing Box culvert for Rainwater Drainage Network Zone 2 | 2026-12-17 → 2026-12-24 (+7d) | 2026-12-21 → 2026-12-28 (+7d) | -125.61d → -131.61d |
| 2 | **Tube Culverts at Road Intersections** |  | 2026-11-21 → 2026-11-28 (+7d) |  |

| ID | Task | Start | Finish | Complete | Total float |
| --- | --- | --- | --- | --- | --- |
| MOD-RWN-PC-124 | Trench excavation under road Tube culvert for Rainwater Drainage Network Zone 2 |  | 2026-11-21 → 2026-11-28 (+7d) |  | -99.51d → -105.51d |
| 3 | **Box Culverts at Road Intersections** |  | 2026-12-15 → 2026-12-22 (+7d) |  |  |
| MOD-RWN-PC-184 | Place bedding material for Rainwater Drainage Network Zone 2 |  | 2026-11-15 → 2026-11-22 (+7d) |  | -120.96d → -126.96d |
| MOD-RWN-PC-194 | Install precast box culvert for Rainwater Drainage Network Zone 2 | 2026-11-16 → 2026-11-23 (+7d) | 2026-11-19 → 2026-11-26 (+7d) |  | -120.96d → -126.96d |
| MOD-RWN-PC-204 | Construct connection chambers (if needed) for Rainwater Drainage Network Zone 2 | 2026-11-21 → 2026-11-28 (+7d) | 2026-11-21 → 2026-11-28 (+7d) |  | -120.96d → -126.96d |
| MOD-RWN-PC-214 | Joint treatment and testing for Rainwater Drainage Network Zone 2 | 2026-11-22 → 2026-11-29 (+7d) | 2026-12-05 → 2026-12-12 (+7d) |  | -120.96d → -126.96d |
| MOD-RWN-PC-224 | Backfilling and surface reinstatement for Rainwater Drainage Network Zone 2 | 2026-12-06 → 2026-12-13 (+7d) | 2026-12-15 → 2026-12-22 (+7d) |  | -120.96d → -126.96d |
| 4 | **Manholes** |  | 2026-12-21 → 2026-12-28 (+7d) |  |  |
| 1 | **Circular GRP Manholes (1200–1800mm dia)** |  | 2026-12-03 → 2026-12-10 (+7d) |  |  |
| MOD-RWN-MH-34 | Dewatering and safety barriers Circular Manhole for Rainwater Drainage Network Zone 2 |  | 2026-11-22 → 2026-11-29 (+7d) |  | -110.66d → -116.66d |
| MOD-RWN-MH-44 | Concrete base construction Circular Manhole for Rainwater Drainage Network Zone 2 |  | 2026-11-23 → 2026-11-30 (+7d) |  | -110.66d → -116.66d |
| MOD-RWN-MH-54 | Install GRP manhole shaft sections Circular Manhole for Rainwater Drainage Network Zone 2 |  | 2026-11-25 → 2026-12-02 (+7d) |  | -110.66d → -116.66d |
| MOD-RWN-MH-64 | Place slab and cover frame Circular Manhole for Rainwater Drainage Network Zone 2 |  | 2026-11-28 → 2026-12-05 (+7d) |  | -110.66d → -116.66d |
| MOD-RWN-MH-74 | Waterproofing Circular Manhole for Rainwater Drainage Network Zone 2 | 2026-11-28 → 2026-12-05 (+7d) | 2026-11-30 → 2026-12-07 (+7d) |  | -110.66d → -116.66d |
| MOD-RWN-MH-84 | Backfilling and compaction Circular Manhole for Rainwater Drainage Network Zone 2 | 2026-12-01 → 2026-12-08 (+7d) | 2026-12-03 → 2026-12-10 (+7d) |  | -110.66d → -116.66d |
| 3 | **Concrete Manholes for 1500x1500 Box Pipes** |  | 2026-12-06 → 2026-12-13 (+7d) |  |  |
| MOD-RWN-MH-174 | Base slab and wall shuttering Concrete Manhole 1.5x1.5 for Rainwater Drainage Network Zone 2 |  | 2026-11-22 → 2026-11-29 (+7d) |  | -112.66d → -118.66d |
| MOD-RWN-MH-184 | Wall reinforcement and casting Concrete Manhole 1.5x1.5 for Rainwater Drainage Network Zone 2 |  | 2026-11-25 → 2026-12-02 (+7d) |  | -112.66d → -118.66d |
| MOD-RWN-MH-194 | Roof slab with openings Concrete Manhole 1.5x1.5 for Rainwater Drainage Network Zone 2 |  | 2026-11-28 → 2026-12-05 (+7d) |  | -112.66d → -118.66d |
| MOD-RWN-MH-204 | Masonry/benching works inside Concrete Manhole 1.5x1.5 for Rainwater Drainage Network Zone 2 | 2026-11-28 → 2026-12-05 (+7d) | 2026-11-30 → 2026-12-07 (+7d) |  | -112.66d → -118.66d |
| MOD-RWN-MH-214 | Install cover and frame Concrete Manhole 1.5x1.5 for Rainwater Drainage Network Zone 2 | 2026-11-30 → 2026-12-07 (+7d) | 2026-12-02 → 2026-12-09 (+7d) |  | -112.66d → -118.66d |
| MOD-RWN-MH-224 | Backfill in layers Concrete Manhole 1.5x1.5 for Rainwater Drainage Network Zone 2 | 2026-12-02 → 2026-12-09 (+7d) | 2026-12-06 → 2026-12-13 (+7d) |  | -112.66d → -118.66d |
| 2 | **Concrete Manholes for 1000x1000 Box Pipes** |  | 2026-12-21 → 2026-12-28 (+7d) |  |  |
| MOD-RWN-MH-94 | Excavation Concrete Manhole 1x1 for Rainwater Drainage Network Zone 2 |  | 2026-11-22 → 2026-11-29 (+7d) |  | -125.99d → -131.99d |
| MOD-RWN-MH-104 | Base slab and wall shuttering Concrete Manhole 1x1 for Rainwater Drainage Network Zone 2 | 2026-11-22 → 2026-11-29 (+7d) | 2026-11-24 → 2026-12-01 (+7d) |  | -125.99d → -131.99d |
| MOD-RWN-MH-114 | Wall reinforcement and casting Concrete Manhole 1x1 for Rainwater Drainage Network Zone 2 | 2026-11-24 → 2026-12-01 (+7d) | 2026-11-30 → 2026-12-07 (+7d) |  | -125.99d → -131.99d |
| MOD-RWN-MH-124 | Roof slab with openings Concrete Manhole 1x1 for Rainwater Drainage Network Zone 2 | 2026-11-30 → 2026-12-07 (+7d) | 2026-12-07 → 2026-12-14 (+7d) |  | -125.99d → -131.99d |
| MOD-RWN-MH-134 | Masonry/benching works inside Concrete Manhole 1x1 for Rainwater Drainage Network Zone 2 | 2026-12-07 → 2026-12-14 (+7d) | 2026-12-13 → 2026-12-20 (+7d) |  | -125.99d → -131.99d |
| MOD-RWN-MH-144 | Install cover and frame Concrete Manhole 1x1 for Rainwater Drainage Network Zone 2 | 2026-12-13 → 2026-12-20 (+7d) | 2026-12-17 → 2026-12-24 (+7d) |  | -125.99d → -131.99d |
| MOD-RWN-MH-154 | Backfill in layers Concrete Manhole 1x1 for Rainwater Drainage Network Zone 2 | 2026-12-17 → 2026-12-24 (+7d) | 2026-12-21 → 2026-12-28 (+7d) |  | -125.99d → -131.99d |
| 3 | **Gully Outfalls to Swales** |  | 2026-12-06 → 2026-12-13 (+7d) |  |  |
| 1 | **Gully Outfalls to Swales** |  | 2026-11-25 → 2026-12-02 (+7d) |  |  |
| MOD-RWN-GO-21 | Excavate outfall channel Gully Outfall to Swales for Rainwater Drainage Network Zone 2 |  | 2026-11-21 → 2026-11-28 (+7d) |  | -103.61d → -109.61d |
| MOD-RWN-GO-31 | Place concrete apron or pipes Gully Outfall to Swales for Rainwater Drainage Network Zone 2 |  | 2026-11-22 → 2026-11-29 (+7d) |  | -103.61d → -109.61d |
| MOD-RWN-GO-41 | Provide slope protection (riprap) Gully Outfall to Swales for Rainwater Drainage Network Zone 2 |  | 2026-11-22 → 2026-11-29 (+7d) |  | -103.61d → -109.61d |
| MOD-RWN-GO-51 | Compact and shape terrain Gully Outfall to Swales for Rainwater Drainage Network Zone 2 | 2026-11-23 → 2026-11-30 (+7d) | 2026-11-25 → 2026-12-02 (+7d) |  | -103.61d → -109.61d |
| 2 | **Riprap Works & Protection** |  | 2026-12-06 → 2026-12-13 (+7d) |  |  |
| MOD-RWN-GO-61 | Lay filter fabric/membrane for Rainwater Drainage Network Zone 2 |  | 2026-11-22 → 2026-11-29 (+7d) |  | -112.41d → -118.41d |
| MOD-RWN-GO-71 | Place riprap/stone layer for Rainwater Drainage Network Zone 2 |  | 2026-11-26 → 2026-12-03 (+7d) |  | -112.41d → -118.41d |
| MOD-RWN-GO-81 | Compact edges for Rainwater Drainage Network Zone 2 | 2026-11-26 → 2026-12-03 (+7d) | 2026-12-02 → 2026-12-09 (+7d) |  | -112.41d → -118.41d |
| MOD-RWN-GO-91 | Ensure hydraulic flow direction for Rainwater Drainage Network Zone 2 | 2026-12-02 → 2026-12-09 (+7d) | 2026-12-06 → 2026-12-13 (+7d) |  | -112.41d → -118.41d |
| 6 | **Backfilling & Bedding** |  | 2026-11-23 → 2026-11-30 (+7d) |  |  |
| 2 | **Gravel Bedding & Filter Cloth for uPVC Drain Pipes** |  | 2026-11-23 → 2026-11-30 (+7d) |  |  |
| MOD-RWN-BB-102 | Final fill and trench restoration for Rainwater Drainage Network Zone 2 |  | 2026-11-23 → 2026-11-30 (+7d) |  | -101.75d → -107.75d |
| MOD-RWN-BB-62 | Line trench with filter cloth for Rainwater Drainage Network Zone 2 |  | 2026-11-16 → 2026-11-23 (+7d) |  | -101.75d → -107.75d |
| MOD-RWN-BB-72 | Place and compact gravel bedding for Rainwater Drainage Network Zone 2 |  | 2026-11-16 → 2026-11-23 (+7d) |  | -101.75d → -107.75d |
| MOD-RWN-BB-82 | Lay pipe within gravel zone for Rainwater Drainage Network Zone 2 |  | 2026-11-18 → 2026-11-25 (+7d) |  | -101.75d → -107.75d |
| MOD-RWN-BB-92 | Wrap filter cloth above pipe for Rainwater Drainage Network Zone 2 |  | 2026-11-21 → 2026-11-28 (+7d) |  | -101.75d → -107.75d |
| 1 | **Potable Water Network Zone 2** |  | 2026-12-30 → 2027-01-06 (+7d) |  |  |
| 1 | **Pipe Installation Works** |  | 2026-11-15 → 2026-11-22 (+7d) |  |  |
| MOD-PWN-PI-153 | Lean Concrete / Pipe Bedding Preparation for Potable Water Network Zone 2 |  | 2026-11-14 → 2026-11-21 (+7d) |  | 46d → 39d |
| MOD-PWN-PI-163 | HDPE Pipe Laying (200 mm to 710 mm) for Potable Water Network Zone 2 |  | 2026-11-14 → 2026-11-21 (+7d) |  | 46d → 39d |
| MOD-PWN-PI-173 | Test (Pressure-slope) for Potable Water Network Zone 2 |  | 2026-11-14 → 2026-11-21 (+7d) |  | 46d → 39d |
| MOD-PWN-PI-203 | Coating / Wrapping for Potable Water Network Zone 2 |  | 2026-11-15 → 2026-11-22 (+7d) |  | 46d → 39d |
| MOD-PWN-PI-213 | Backfilling & Warrning Tape for Potable Water Network Zone 2 |  | 2026-11-15 → 2026-11-22 (+7d) |  | 46d → 39d |
| 2 | **Valve Installation & Chambers** |  | 2026-11-19 → 2026-11-26 (+7d) |  |  |
| MOD-PWN-VC-37 | Valve Chamber Excavation for Potable Water Network Zone 2 |  | 2026-11-14 → 2026-11-21 (+7d) |  | 20.56d → 14.56d |
| MOD-PWN-VC-47 | RC Slab, Walls, or Precast Chambers for Potable Water Network Zone 2 |  | 2026-11-14 → 2026-11-21 (+7d) |  | 36.08d → 30.08d |
| MOD-PWN-VC-7 | Gate Valves (225–710 mm) for Potable Water Network Zone 2 |  | 2026-11-14 → 2026-11-21 (+7d) |  | 36.44d → 30.44d |
| MOD-PWN-VC-17 | Butterfly Valves (355, 500, 630 mm) for Potable Water Network Zone 2 |  | 2026-11-14 → 2026-11-21 (+7d) |  | 36.44d → 30.44d |
| MOD-PWN-VC-27 | 3-exit (2 x 2.5-inch and 1 x 4-inch) dry vacuum cylinder detachable fire nozzle for Potable Water Network Zone 2 |  | 2026-11-14 → 2026-11-21 A (+7d) | 96% → 100% | 36.44d → none |
| MOD-PWN-VC-57 | Fixing Covers, Gratings, Frames for Potable Water Network Zone 2 |  | 2026-11-15 → 2026-11-22 (+7d) |  | 36.08d → 30.08d |
| MOD-PWN-VC-67 | Tagging & Painting for Potable Water Network Zone 2 | 2026-11-15 → 2026-11-22 (+7d) | 2026-11-19 → 2026-11-26 (+7d) |  | 36.08d → 30.08d |
| 3 | **Flow Meter Installation** |  | 2026-12-30 → 2027-01-06 (+7d) |  |  |
| MOD-PWN-FM-5 | Chamber Excavation (280 mm, 300 mm, 500 mm, 800 mm) for Potable Water Network Zone 2 |  | 2026-11-15 → 2026-11-22 (+7d) |  | 20.56d → 14.56d |
| MOD-PWN-FM-15 | RC or Precast Chamber Construction for Potable Water Network Zone 2 |  | 2026-11-17 → 2026-11-24 (+7d) |  | 20.56d → 14.56d |
| MOD-PWN-FM-25 | Flowmeter Installation & Pipe Integration for Potable Water Network Zone 2 |  | 2026-12-17 → 2026-12-24 (+7d) |  | 1.15d → -4.85d |
| MOD-PWN-FM-35 | Wiring/Cabling if applicable for Potable Water Network Zone 2 | 2026-12-17 → 2026-12-24 (+7d) | 2026-12-27 → 2027-01-03 (+7d) |  | 1.15d → -4.85d |
| MOD-PWN-FM-45 | Calibration & Commissioning for Potable Water Network Zone 2 | 2026-12-27 → 2027-01-03 (+7d) | 2026-12-30 → 2027-01-06 (+7d) |  | 1.15d → -4.85d |
| 4 | **Washout & Air Valve Chambers** |  | 2026-11-19 → 2026-11-26 (+7d) |  |  |

| ID | Task | Start | Finish | Complete | Total float |
| --- | --- | --- | --- | --- | --- |
| MOD-PWN-WA-27 | Pipe Work for Potable Water Network Zone 2 |  | 2026-11-15 → 2026-11-22 (+7d) | 91% → 96% | 36.1d → 30.1d |
| MOD-PWN-WA-37 | Washout (Valve + Outlet) Installation for Potable Water Network Zone 2 |  | 2026-11-15 → 2026-11-22 (+7d) | 93% → 95% | 36.1d → 30.1d |
| MOD-PWN-WA-47 | Air Valve Rooms (Valve + Outlet) Installation for Potable Water Network Zone 2 |  | 2026-11-16 → 2026-11-23 (+7d) | 86% → 90% | 36.1d → 30.1d |
| MOD-PWN-WA-57 | Covers, Ladders & Tags for Potable Water Network Zone 2 |  | 2026-11-17 → 2026-11-24 (+7d) | 84% → 88% | 36.1d → 30.1d |
| MOD-PWN-WA-67 | Backfilling & Final Finishing for Potable Water Network Zone 2 | 2026-11-17 → 2026-11-24 (+7d) | 2026-11-19 → 2026-11-26 (+7d) |  | 36.1d → 30.1d |
| 2 | **Irrigation Network Zone 2** |  | 2026-12-17 → 2026-12-24 (+7d) |  |  |
| 1 | **Excavation, Pipe Laying & Backfilling** |  | 2026-11-16 → 2026-11-22 (+6d) |  |  |
| MOD-IRN-EB-340 | Lean Concrete / Pipe Bedding with Type B Material for Irrigation Network Zone 2 |  | 2026-11-14 → 2026-11-21 (+7d) |  | 45.2d → 38.32d |
| MOD-IRN-EB-350 | HDPE Pipe Laying (125 mm to 630 mm) for Irrigation Network Zone 2 |  | 2026-11-14 → 2026-11-21 (+7d) |  | 45.2d → 38.32d |
| MOD-IRN-EB-360 | Test (Pressure-slope) for Irrigation Network Zone 2 |  | 2026-11-15 → 2026-11-22 (+7d) |  | 45.2d → 38.32d |
| MOD-IRN-EB-370 | Coating / Wrapping for Irrigation Network Zone 2 |  | 2026-11-15 → 2026-11-22 (+7d) |  | 45.2d → 38.32d |
| MOD-IRN-EB-380 | Backfilling & Warrning Tape for Irrigation Network Zone 2 |  | 2026-11-16 → 2026-11-22 (+6d) |  | 45.2d → 38.32d |
| 2 | **Valves and Appurtenances** |  | 2026-11-16 → 2026-11-23 (+7d) |  |  |
| MOD-IRN-VA-5 | Supply & Installation of Valves (Gate Valve) for Irrigation Network Zone 2 |  | 2026-11-14 → 2026-11-21 (+7d) |  | 34.2d → 28.2d |
| MOD-IRN-VA-15 | Supply & Installation of Valves (Butterfly Valve) for Irrigation Network Zone 2 |  | 2026-11-14 → 2026-11-21 (+7d) |  | 34.2d → 28.2d |
| MOD-IRN-VA-25 | Installation of Flanges, Bolts, Collars, Nuts for Irrigation Network Zone 2 |  | 2026-11-15 → 2026-11-22 (+7d) |  | 34.2d → 28.2d |
| MOD-IRN-VA-35 | Valve Pressure Testing for Irrigation Network Zone 2 |  | 2026-11-15 → 2026-11-22 (+7d) |  | 38.7d → 32.7d |
| MOD-IRN-VA-45 | Support Brackets/Anchor Blocks for Irrigation Network Zone 2 |  | 2026-11-16 → 2026-11-23 (+7d) |  | 38.7d → 32.7d |
| 3 | **Valve Rooms** |  | 2026-11-15 → 2026-11-22 (+7d) |  |  |
| MOD-IRN-VR-67 | Backfilling and Finishing Valve Chamber for Irrigation Network Zone 2 |  | 2026-11-15 → 2026-11-22 (+7d) |  | 40d → 34d |
| 4 | **Washout Chambers** |  | 2026-11-15 → 2026-11-22 (+7d) |  |  |
| MOD-IRN-WC-46 | Manhole Frame, Cover & Ladder Fixing Washout Chamber for Irrigation Network Zone 2 |  | 2026-11-14 → 2026-11-21 (+7d) |  | 40.35d → 34.35d |
| MOD-IRN-WC-56 | Backfilling & Reinstatement Washout Chamber for Irrigation Network Zone 2 |  | 2026-11-15 → 2026-11-22 (+7d) |  | 40.35d → 34.35d |
| 6 | **Flow Meter Chambers** |  | 2026-12-17 → 2026-12-24 (+7d) |  |  |
| MOD-IRN-FC-16 | RCC Base & Wall Construction Flow Meter Chamber for Irrigation Network Zone 2 |  | 2026-11-15 → 2026-11-22 (+7d) |  | 34.2d → 28.2d |
| MOD-IRN-FC-26 | Flow Meter Installation (280, 300, 500 mm) Flow Meter Chamber for Irrigation Network Zone 2 |  | 2026-12-10 → 2026-12-17 (+7d) |  | 12.25d → 6.25d |
| MOD-IRN-FC-36 | Integration with Pipework Flow Meter Chamber for Irrigation Network Zone 2 |  | 2026-12-12 → 2026-12-19 (+7d) |  | 12.25d → 6.25d |
| MOD-IRN-FC-46 | Testing & Calibration Flow Meter Chamber for Irrigation Network Zone 2 |  | 2026-12-14 → 2026-12-21 (+7d) |  | 12.25d → 6.25d |
| MOD-IRN-FC-56 | Cover and Access Arrangement Flow Meter Chamber for Irrigation Network Zone 2 | 2026-12-14 → 2026-12-21 (+7d) | 2026-12-17 → 2026-12-24 (+7d) |  | 12.25d → 6.25d |
| 3 | **Rainwater Collection Ponds Zone 2** |  | 2027-04-08 → 2027-04-14 (+6d) |  |  |
| 10 | **Excavation for Rainwater Drainage Pond** |  | 2027-01-16 → 2027-01-23 (+7d) |  |  |
| 11 | **Deep excavation, backfill, disposal for pond formation** |  | 2027-01-16 → 2027-01-23 (+7d) |  |  |
| MOD-RCP-ER-18 | Excavate in layers to final depth for Rainwater Collection Ponds Zone 2 |  | 2027-01-09 → 2027-01-16 (+7d) |  | 86d → 80d |
| MOD-RCP-ER-28 | Dewater during excavation for Rainwater Collection Ponds Zone 2 |  | 2027-01-10 → 2027-01-17 (+7d) |  | 86d → 80d |
| MOD-RCP-ER-38 | Place warning tapes for Rainwater Collection Ponds Zone 2 |  | 2027-01-10 → 2027-01-17 (+7d) |  | 86d → 80d |
| MOD-RCP-ER-48 | Dispose of rock/materials to approved dump area for Rainwater Collection Ponds Zone 2 |  | 2027-01-11 → 2027-01-18 (+7d) |  | 86d → 80d |
| MOD-RCP-ER-58 | Backfill selected areas as per design for Rainwater Collection Ponds Zone 2 | 2027-01-11 → 2027-01-18 (+7d) | 2027-01-13 → 2027-01-20 (+7d) |  | 86d → 80d |
| MOD-RCP-ER-68 | Final trimming and profiling for Rainwater Collection Ponds Zone 2 | 2027-01-13 → 2027-01-20 (+7d) | 2027-01-16 → 2027-01-23 (+7d) |  | 86d → 80d |
| 2 | **Backfilling Works** |  | 2027-01-23 → 2027-01-28 (+5d) |  |  |
| MOD-RCP-BW-15 | Place in layers not exceeding 300mm for Rainwater Collection Ponds Zone 2 |  | 2027-01-14 → 2027-01-20 (+6d) |  | 79.9d → 75.02d |
| MOD-RCP-BW-5 | Select material from excavation or import approved material for Rainwater Collection Ponds Zone 2 |  | 2027-01-12 → 2027-01-18 (+6d) |  | 30.8d → 25.1d |
| MOD-RCP-BW-25 | Compact each layer to required density for Rainwater Collection Ponds Zone 2 |  | 2027-01-17 → 2027-01-23 (+6d) |  | 79.9d → 75.02d |
| MOD-RCP-BW-35 | Conduct field density tests for Rainwater Collection Ponds Zone 2 |  | 2027-01-17 → 2027-01-23 (+6d) |  | 79.9d → 75.02d |
| MOD-RCP-BW-45 | Final leveling and approval for Rainwater Collection Ponds Zone 2 | 2027-01-17 → 2027-01-23 (+6d) | 2027-01-23 → 2027-01-28 (+5d) |  | 79.9d → 75.02d |
| 12 | **Geotextile & Bedding** |  | 2027-03-30 → 2027-04-05 (+6d) |  |  |
| 13 | **Installation of geotextile lining and coarse sand bedding** |  | 2027-03-30 → 2027-04-05 (+6d) |  |  |
| MOD-RCP-GB-15 | Lay HDPE geotextile membrane over compacted soil for Rainwater Collection Ponds Zone 2 |  | 2027-01-26 → 2027-02-02 (+7d) |  | 30.8d → 25.1d |
| MOD-RCP-GB-25 | Place 500mm thick coarse sand bedding for Rainwater Collection Ponds Zone 2 |  | 2027-03-02 → 2027-03-16 (+14d) |  | 30.8d → 25.1d |
| MOD-RCP-GB-35 | Compact and level bedding for Rainwater Collection Ponds Zone 2 | 2027-03-02 → 2027-03-16 (+14d) | 2027-03-30 → 2027-04-05 (+6d) |  | 30.8d → 25.1d |
| 3 | **Concrete Structures** |  | 2027-04-08 → 2027-04-14 (+6d) |  |  |
| 4 | **Construction of pond slab, walls, vertical structures** |  | 2027-04-08 → 2027-04-14 (+6d) |  |  |
| MOD-RCP-CS-30 | Install formwork and reinforcement for Rainwater Collection Ponds Zone 2 |  | 2027-04-08 → 2027-04-14 (+6d) |  | 30.8d → 25.1d |
| 4 | **Road Crossing Zone 2** | 2027-01-07 → 2027-01-14 (+7d) | 2027-08-09 → 2027-08-16 (+7d) |  |  |
| 14 | **uPVC Road Crossing Pipes** | 2027-01-07 → 2027-01-14 (+7d) | 2027-04-14 → 2027-04-21 (+7d) |  |  |
| 15 | **Installation of uPVC pipes of various diameters crossing roadways** | 2027-01-07 → 2027-01-14 (+7d) | 2027-04-14 → 2027-04-21 (+7d) |  |  |
| MOD-ROC-PV-10 | Demarcation and traffic diversion (if required) for Road Crossing Zone 2 | 2027-01-07 → 2027-01-14 (+7d) | 2027-01-14 → 2027-01-21 (+7d) |  | -137d → -143d |
| MOD-ROC-PV-20 | Saw cutting and removal of asphalt (if applicable) for Road Crossing Zone 2 | 2027-01-14 → 2027-01-21 (+7d) | 2027-01-28 → 2027-02-04 (+7d) |  | -137d → -143d |
| MOD-ROC-PV-30 | Excavation across road width to required depth for Road Crossing Zone 2 | 2027-01-28 → 2027-02-04 (+7d) | 2027-02-11 → 2027-02-24 (+13d) |  | -137d → -143d |
| MOD-ROC-PV-40 | Preparation of trench base with compacted bedding for Road Crossing Zone 2 | 2027-02-11 → 2027-02-24 (+13d) | 2027-02-21 → 2027-03-06 (+13d) |  | -137d → -143d |
| MOD-ROC-PV-50 | Laying of uPVC pipe (300mm, 315mm, 400mm, 600mm dia) for Road Crossing Zone 2 | 2027-02-21 → 2027-03-06 (+13d) | 2027-03-16 → 2027-03-23 (+7d) |  | -137d → -143d |
| MOD-ROC-PV-60 | Placement of supports and protection around the pipe for Road Crossing Zone 2 | 2027-03-17 → 2027-03-24 (+7d) | 2027-03-22 → 2027-03-29 (+7d) |  | -137d → -143d |
| MOD-ROC-PV-70 | Testing of installed pipeline for Road Crossing Zone 2 | 2027-03-23 → 2027-03-30 (+7d) | 2027-03-29 → 2027-04-05 (+7d) |  | -137d → -143d |
| MOD-ROC-PV-80 | Backfilling and compaction in layers for Road Crossing Zone 2 | 2027-03-30 → 2027-04-06 (+7d) | 2027-04-07 → 2027-04-14 (+7d) |  | -137d → -143d |
| MOD-ROC-PV-90 | Reinstatement of road surface for Road Crossing Zone 2 | 2027-04-08 → 2027-04-15 (+7d) | 2027-04-14 → 2027-04-21 (+7d) |  | -137d → -143d |
| 16 | **GRP Road Crossing Pipes** | 2027-04-15 → 2027-04-22 (+7d) | 2027-08-09 → 2027-08-16 (+7d) |  |  |
| 17 | **Installation of GRP pipes (800mm–1000mm dia) for road crossings** | 2027-04-15 → 2027-04-22 (+7d) | 2027-08-09 → 2027-08-16 (+7d) |  |  |
| MOD-ROC-GR-10 | Set out location and coordinate with road authority for Road Crossing Zone 2 | 2027-04-15 → 2027-04-22 (+7d) | 2027-04-20 → 2027-04-27 (+7d) |  | -137d → -143d |
| MOD-ROC-GR-20 | Excavate trench across road at designed depth for Road Crossing Zone 2 | 2027-04-21 → 2027-04-28 (+7d) | 2027-05-04 → 2027-05-11 (+7d) |  | -137d → -143d |
| MOD-ROC-GR-30 | Lay compacted granular bedding for Road Crossing Zone 2 | 2027-05-05 → 2027-05-12 (+7d) | 2027-05-27 → 2027-06-03 (+7d) |  | -137d → -143d |
| MOD-ROC-GR-40 | Install GRP pipe (800mm & 1000mm dia) for Road Crossing Zone 2 | 2027-05-29 → 2027-06-05 (+7d) | 2027-06-21 → 2027-06-28 (+7d) |  | -137d → -143d |

| ID | Task | Start | Finish | Complete | Total float |
| --- | --- | --- | --- | --- | --- |
| MOD-ROC-GR-50 | Provide structural supports and closure at both ends for Road Crossing Zone 2 | 2027-06-22 → 2027-06-29 (+7d) | 2027-07-01 → 2027-07-08 (+7d) |  | -137d → -143d |
| MOD-ROC-GR-60 | Perform leak testing as per specifications for Road Crossing Zone 2 | 2027-07-03 → 2027-07-10 (+7d) | 2027-07-07 → 2027-07-14 (+7d) |  | -137d → -143d |
| MOD-ROC-GR-70 | Backfill and compact in layers for Road Crossing Zone 2 | 2027-07-08 → 2027-07-15 (+7d) | 2027-07-25 → 2027-08-01 (+7d) |  | -137d → -143d |
| MOD-ROC-GR-80 | Reinstate road surface (asphalt/concrete) for Road Crossing Zone 2 | 2027-07-26 → 2027-08-02 (+7d) | 2027-08-03 → 2027-08-10 (+7d) |  | -137d → -143d |
| MOD-ROC-GR-90 | Final inspection and approval by relevant authority for Road Crossing Zone 2 | 2027-08-04 → 2027-08-11 (+7d) | 2027-08-09 → 2027-08-16 (+7d) |  | -137d → -143d |
| 6 | **Zone 1** |  | 2027-10-26 → 2027-11-02 (+7d) |  |  |
| 1 | **Sewerage Network Zone 1** |  | 2027-04-25 → 2027-05-02 (+7d) |  |  |
| 1 | **Pipework: Supply, Installation, and Testing** |  | 2026-11-19 → 2026-11-26 (+7d) |  |  |
| 3 | **HDPE Pressure Pipes Installation (250mm–630mm)** |  | 2026-11-19 → 2026-11-26 (+7d) |  |  |
| MOD-SWN-PW-775 | Lean Concrete / Bedding HDPE for Sewerage Network Zone 1 |  | 2026-11-15 → 2026-11-22 (+7d) |  | 74.15d → 67.15d |
| MOD-SWN-PW-785 | Test (Pressure - Slope) HDPE for Sewerage Network Zone 1 |  | 2026-11-15 → 2026-11-22 (+7d) |  | 119.6d → 112.6d |
| MOD-SWN-PW-755 | Backfilling & Warrning Tape HDPE for Sewerage Network Zone 1 |  | 2026-11-19 → 2026-11-26 (+7d) |  | 119.6d → 112.6d |
| 2 | **Fittings and Valves** | 2026-11-15 → 2026-11-22 (+7d) | 2026-12-16 → 2026-12-23 (+7d) |  |  |
| MOD-SWN-FV-001 | Supply & Installation of HDPE Elbows for Sewerage Network Zone 1 | 2026-11-15 → 2026-11-22 (+7d) | 2026-11-22 → 2026-11-29 (+7d) |  | 64.15d → 58.15d |
| MOD-SWN-FV-002 | Gate Valves Installation for Sewerage Network Zone 1 | 2026-11-22 → 2026-11-29 (+7d) | 2026-11-26 → 2026-12-03 (+7d) |  | 64.15d → 58.15d |
| MOD-SWN-FV-003 | Drain Valves Installation for Sewerage Network Zone 1 | 2026-11-26 → 2026-12-03 (+7d) | 2026-12-01 → 2026-12-08 (+7d) |  | 64.15d → 58.15d |
| MOD-SWN-FV-004 | Air Breather & Air Release Valves Installation for Sewerage Network Zone 1 | 2026-12-01 → 2026-12-08 (+7d) | 2026-12-13 → 2026-12-20 (+7d) |  | 64.15d → 58.15d |
| MOD-SWN-FV-005 | Jointing & Piping Accessories Installation for Sewerage Network Zone 1 | 2026-12-13 → 2026-12-20 (+7d) | 2026-12-16 → 2026-12-23 (+7d) |  | 64.15d → 58.15d |
| 3 | **Valve & Flow Meter Chambers** |  | 2027-01-23 → 2027-01-29 (+6d) |  |  |
| 1 | **Valve Chambers Construction** |  | 2027-01-07 → 2027-01-14 (+7d) |  |  |
| MOD-SWN-PW-1135 | Excavation Valve Chamber for Sewerage Network Zone 1 |  | 2026-11-23 → 2026-11-30 (+7d) |  | 54.65d → 48.6d |
| MOD-SWN-PW-1145 | Lean Concrete / Bedding Valve Chamber for Sewerage Network Zone 1 |  | 2026-12-04 → 2026-12-11 (+7d) |  | 54.65d → 48.6d |
| MOD-SWN-VF-164 | Valve Chambers Construction Valve Chamber for Sewerage Network Zone 1 |  | 2026-12-08 → 2026-12-15 (+7d) |  | 54.65d → 48.6d |
| MOD-SWN-PW-1155 | Test Valve Chamber for Sewerage Network Zone 1 | 2026-12-08 → 2026-12-15 (+7d) | 2026-12-23 → 2026-12-30 (+7d) |  | 69.8d → 62.8d |
| MOD-SWN-PW-1125 | Backfilling Valve Chamber for Sewerage Network Zone 1 | 2026-12-23 → 2026-12-30 (+7d) | 2027-01-07 → 2027-01-14 (+7d) |  | 69.8d → 62.8d |
| 2 | **Water Drain Chambers Construction** |  | 2027-01-05 → 2027-01-11 (+6d) |  |  |
| MOD-SWN-PW-1175 | Excavation Water Drain Chamber for Sewerage Network Zone 1 |  | 2026-11-19 → 2026-11-25 (+6d) |  | 68d → 64.47d |
| MOD-SWN-PW-1185 | Lean Concrete / Bedding Water Drain Chamber for Sewerage Network Zone 1 |  | 2026-11-25 → 2026-11-30 (+5d) |  | 68d → 64.47d |
| MOD-SWN-VF-174 | Water Drain Chambers Construction Water Drain Chamber for Sewerage Network Zone 1 |  | 2026-12-15 → 2026-12-21 (+6d) |  | 54.65d → 48.6d |
| MOD-SWN-PW-1195 | Test Water Drain Chamber for Sewerage Network Zone 1 |  | 2026-12-21 → 2026-12-27 (+6d) | 60% → 65% | 72.15d → 66.1d |
| MOD-SWN-PW-1165 | Backfilling Water Drain Chamber for Sewerage Network Zone 1 | 2026-12-21 → 2026-12-27 (+6d) | 2027-01-05 → 2027-01-11 (+6d) |  | 72.15d → 66.1d |
| 3 | **Discharge Chambers Construction** |  | 2027-01-21 → 2027-01-27 (+6d) |  |  |
| MOD-SWN-PW-1215 | Excavation Discharge Chamber for Sewerage Network Zone 1 |  | 2026-11-18 → 2026-11-25 (+7d) |  | 73.6d → 66.6d |
| MOD-SWN-PW-1225 | Lean Concrete / Bedding Discharge Chamber for Sewerage Network Zone 1 |  | 2026-11-26 → 2026-12-03 (+7d) |  | 73.6d → 66.6d |
| MOD-SWN-VF-184 | Discharge Chambers Construction Discharge Chamber for Sewerage Network Zone 1 |  | 2026-12-22 → 2026-12-28 (+6d) | 50% → 55% | 54.65d → 48.6d |
| MOD-SWN-PW-1235 | Test Discharge Chamber for Sewerage Network Zone 1 | 2026-12-22 → 2026-12-28 (+6d) | 2027-01-06 → 2027-01-12 (+6d) |  | 56.65d → 50.6d |
| MOD-SWN-PW-1205 | Backfilling Discharge Chamber for Sewerage Network Zone 1 | 2027-01-06 → 2027-01-12 (+6d) | 2027-01-21 → 2027-01-27 (+6d) |  | 56.65d → 50.6d |
| 4 | **Flow Meter Chambers Construction** |  | 2027-01-23 → 2027-01-29 (+6d) |  |  |
| MOD-SWN-PW-1255 | Excavation Flow Meter Chamber for Sewerage Network Zone 1 |  | 2026-11-21 → 2026-11-28 (+7d) |  | 76.53d → 69.53d |
| MOD-SWN-PW-1265 | Lean Concrete / Bedding Flow Meter Chamber for Sewerage Network Zone 1 |  | 2026-11-30 → 2026-12-07 (+7d) |  | 76.53d → 69.53d |
| MOD-SWN-VF-194 | Flow Meter Chambers Construction Flow Meter Chamber for Sewerage Network Zone 1 |  | 2026-12-24 → 2026-12-30 (+6d) |  | 54.65d → 48.6d |
| MOD-SWN-PW-1275 | Test Flow Meter Chamber for Sewerage Network Zone 1 | 2026-12-24 → 2026-12-30 (+6d) | 2027-01-08 → 2027-01-14 (+6d) |  | 54.65d → 48.6d |
| MOD-SWN-PW-1245 | Backfilling Flow Meter Chamber for Sewerage Network Zone 1 | 2027-01-08 → 2027-01-14 (+6d) | 2027-01-23 → 2027-01-29 (+6d) |  | 54.65d → 48.6d |
| 4 | **Manholes** |  | 2026-12-05 → 2026-12-12 (+7d) |  |  |
| 1 | **1200mm GRP Manholes with Backdrop** |  | 2026-12-05 → 2026-12-12 (+7d) |  |  |
| MOD-SWN-PW-1295 | Excavation 1.2m GRP for Sewerage Network Zone 1 |  | 2026-11-14 → 2026-11-21 (+7d) |  | 103.57d → 96.57d |
| MOD-SWN-PW-1305 | Lean Concrete / Bedding 1.2m GRP for Sewerage Network Zone 1 |  | 2026-11-14 → 2026-11-21 (+7d) |  | 103.57d → 96.57d |
| MOD-SWN-MH-105 | 1200mm GRP Manholes with Backdrop 1.2m GRP for Sewerage Network Zone 1 |  | 2026-11-15 → 2026-11-22 (+7d) |  | 103.57d → 96.57d |
| MOD-SWN-PW-1285 | Backfilling 1.2m GRP for Sewerage Network Zone 1 |  | 2026-12-05 → 2026-12-12 (+7d) |  | 103.57d → 96.57d |
| MOD-SWN-PW-1315 | Test 1.2m GRP for Sewerage Network Zone 1 | 2026-11-15 → 2026-11-22 (+7d) | 2026-11-20 → 2026-11-27 (+7d) |  | 103.57d → 96.57d |
| 2 | **1500mm GRP Manholes (Standard & Backdrop)** |  | 2026-12-05 → 2026-12-12 (+7d) |  |  |
| MOD-SWN-PW-1335 | Excavation 1.5m GRP for Sewerage Network Zone 1 |  | 2026-11-14 → 2026-11-21 (+7d) |  | 103.57d → 96.57d |
| MOD-SWN-PW-1345 | Lean Concrete / Bedding 1.5m GRP for Sewerage Network Zone 1 |  | 2026-11-14 → 2026-11-21 (+7d) |  | 103.57d → 96.57d |
| MOD-SWN-MH-115 | 1500mm GRP Manholes (Standard & Backdrop) 1.5m GRP for Sewerage Network Zone 1 |  | 2026-11-15 → 2026-11-22 (+7d) |  | 103.57d → 96.57d |
| MOD-SWN-PW-1325 | Backfilling 1.5m GRP for Sewerage Network Zone 1 |  | 2026-12-05 → 2026-12-12 (+7d) |  | 103.57d → 96.57d |
| MOD-SWN-PW-1355 | Test 1.5m GRP for Sewerage Network Zone 1 | 2026-11-15 → 2026-11-22 (+7d) | 2026-11-20 → 2026-11-27 (+7d) |  | 103.57d → 96.57d |
| 3 | **1800mm GRP Manholes (Standard & Backdrop)** |  | 2026-12-04 → 2026-12-11 (+7d) |  |  |
| MOD-SWN-PW-1375 | Excavation 1.8m GRP for Sewerage Network Zone 1 |  | 2026-11-14 → 2026-11-21 (+7d) |  | 103.57d → 96.57d |
| MOD-SWN-PW-1385 | Lean Concrete / Bedding 1.8m GRP for Sewerage Network Zone 1 |  | 2026-11-14 → 2026-11-21 (+7d) |  | 103.57d → 96.57d |
| MOD-SWN-MH-125 | 1800mm GRP Manholes (Standard & Backdrop) 1.8m GRP for Sewerage Network Zone 1 |  | 2026-11-15 → 2026-11-22 (+7d) |  | 103.57d → 96.57d |
| MOD-SWN-PW-1365 | Backfilling 1.8m GRP for Sewerage Network Zone 1 |  | 2026-12-04 → 2026-12-11 (+7d) |  | 103.77d → 96.77d |
| MOD-SWN-PW-1395 | Test 1.8m GRP for Sewerage Network Zone 1 | 2026-11-15 → 2026-11-22 (+7d) | 2026-11-20 → 2026-11-27 (+7d) |  | 103.77d → 96.77d |
| 4 | **2000mm GRP Manholes (Standard & Backdrop)** |  | 2026-12-05 → 2026-12-12 (+7d) |  |  |
| MOD-SWN-PW-1415 | Excavation 2m GRP for Sewerage Network Zone 1 |  | 2026-11-14 → 2026-11-21 (+7d) |  | 103.57d → 96.57d |
| MOD-SWN-PW-1425 | Lean Concrete / Bedding 2m GRP for Sewerage Network Zone 1 |  | 2026-11-14 → 2026-11-21 (+7d) |  | 103.57d → 96.57d |
| MOD-SWN-MH-135 | 2000mm GRP Manholes (Standard & Backdrop) 2m GRP for Sewerage Network Zone 1 |  | 2026-11-15 → 2026-11-22 (+7d) |  | 103.57d → 96.57d |
| MOD-SWN-PW-1405 | Backfilling 2m GRP for Sewerage Network Zone 1 |  | 2026-12-05 → 2026-12-12 (+7d) |  | 103.57d → 96.57d |
| MOD-SWN-PW-1435 | Test 2m GRP for Sewerage Network Zone 1 | 2026-11-15 → 2026-11-22 (+7d) | 2026-11-20 → 2026-11-27 (+7d) |  | 103.57d → 96.57d |
| 5 | **Pumping Stations** |  | 2027-04-25 → 2027-05-02 (+7d) |  |  |
| 1 | **Sewage Pumps and MCC System** | 2026-12-10 → 2026-12-17 (+7d) | 2027-01-31 → 2027-02-07 (+7d) |  |  |

| ID | Task | Start | Finish | Complete | Total float |
| --- | --- | --- | --- | --- | --- |
| MOD-SWN-PS-002 | Sewage pumps incl. MCC, control panel, flow meters, transducers, switches, GRP piping, testing & installation – PS1 for | 2026-12-10 → 2026-12-17 (+7d) | 2026-12-23 → 2026-12-30 (+7d) |  | 21.35d → 15.35d |
| MOD-SWN-PS-003 | Sewage pumps (2x86 l/s, 1x325 l/s) incl. MCC – PS1 for Sewerage Network Zone 1 | 2026-12-23 → 2026-12-30 (+7d) | 2027-01-06 → 2027-01-13 (+7d) |  | 21.35d → 15.35d |
| MOD-SWN-PS-004 | Sewage pumps (2x55 l/s) incl. MCC – PS2 for Sewerage Network Zone 1 | 2027-01-06 → 2027-01-13 (+7d) | 2027-01-31 → 2027-02-07 (+7d) |  | 21.35d → 15.35d |
| 2 | **Odor Control System** | 2027-01-11 → 2027-01-18 (+7d) | 2027-02-11 → 2027-02-24 (+13d) |  |  |
| MOD-SWN-PS-0081 | Odor control system – All stations (PS1) for Sewerage Network Zone 1 | 2027-01-11 → 2027-01-18 (+7d) | 2027-01-23 → 2027-01-30 (+7d) |  | -35.21d → -41.21d |
| MOD-SWN-PS-0082 | Odor control system – All stations (PS2) for Sewerage Network Zone 1 | 2027-01-23 → 2027-01-30 (+7d) | 2027-02-11 → 2027-02-24 (+13d) |  | 12.79d → 6.79d |
| 3 | **In-Line Booster Stations** | 2027-01-23 → 2027-01-30 (+7d) | 2027-04-25 → 2027-05-02 (+7d) |  |  |
| MOD-SWN-PS-010 | In-Line Booster Stations - Civil Works for Sewerage Network Zone 1 | 2027-01-23 → 2027-01-30 (+7d) | 2027-02-24 → 2027-03-08 (+12d) |  | -35.21d → -41.21d |
| MOD-SWN-PS-1164 | In-Line Booster Stations - Mechanical Works for Sewerage Network Zone 1 | 2027-02-24 → 2027-03-08 (+12d) | 2027-03-31 → 2027-04-07 (+7d) |  | -35.21d → -41.21d |
| MOD-SWN-PS-1174 | In-Line Booster Stations - Electrical Works for Sewerage Network Zone 1 | 2027-03-31 → 2027-04-07 (+7d) | 2027-04-25 → 2027-05-02 (+7d) |  | -35.21d → -41.21d |
| 7 | **Engine/Motor Control Center Buildings** | 2026-11-14 → 2026-11-21 (+7d) | 2026-11-22 → 2026-11-29 (+7d) |  |  |
| MOD-SWN-PS-038 | MCC Building – PS1 for Sewerage Network Zone 1 | 2026-11-14 → 2026-11-21 (+7d) | 2026-11-14 → 2026-11-21 (+7d) |  | 25.6d → 19.6d |
| MOD-SWN-PS-039 | MCC Building – PS2 for Sewerage Network Zone 1 | 2026-11-15 → 2026-11-22 (+7d) | 2026-11-22 → 2026-11-29 (+7d) |  | 49.6d → 43.6d |
| 4 | **Valves and Fittings (General Supply & Installation)** | 2026-12-10 → 2026-12-17 (+7d) | 2026-12-16 → 2026-12-23 (+7d) |  |  |
| MOD-SWN-PS-012 | Valves, fittings & accessories – PS1 for Sewerage Network Zone 1 | 2026-12-10 → 2026-12-17 (+7d) | 2026-12-13 → 2026-12-20 (+7d) |  | 60.35d → 54.35d |
| MOD-SWN-PS-013 | 35mm raked bar SS 316 mesh – PS1 for Sewerage Network Zone 1 | 2026-12-13 → 2026-12-20 (+7d) | 2026-12-14 → 2026-12-21 (+7d) |  | 60.35d → 54.35d |
| MOD-SWN-PS-014 | Valves, fittings, flow meters – PS2 for Sewerage Network Zone 1 | 2026-12-14 → 2026-12-21 (+7d) | 2026-12-16 → 2026-12-23 (+7d) |  | 60.35d → 54.35d |
| 5 | **Tank with Canopy** | 2027-02-24 → 2027-03-08 (+12d) | 2027-03-22 → 2027-03-29 (+7d) |  |  |
| MOD-SWN-PS-019 | Tank with canopy (per specs/drawings) - PS1 for Sewerage Network Zone 1 | 2027-02-24 → 2027-03-08 (+12d) | 2027-03-22 → 2027-03-29 (+7d) |  | -6.21d → -12.21d |
| 6 | **Pump Well and Valve Chambers** | 2026-11-15 → 2026-11-22 (+7d) | 2027-01-25 → 2027-02-01 (+7d) |  |  |
| MOD-SWN-PS-022 | Pump well & valve chamber structure – PS1 (2 wells, 12m deep) for Sewerage Network Zone 1 | 2026-11-15 → 2026-11-22 (+7d) | 2026-11-29 → 2026-12-06 (+7d) |  | 25.6d → 19.6d |
| MOD-SWN-PS-023 | Concrete wall (5x5x1m) inside PS1 well for Sewerage Network Zone 1 | 2026-11-30 → 2026-12-07 (+7d) | 2026-12-07 → 2026-12-14 (+7d) |  | 25.6d → 19.6d |
| MOD-SWN-PS-027 | Pump well & valve chamber structure – PS2 (2 wells, 3m each, 9m depth) for Sewerage Network Zone 1 | 2026-11-30 → 2026-12-07 (+7d) | 2026-12-15 → 2026-12-22 (+7d) |  | 29.6d → 23.6d |
| MOD-SWN-PS-024 | 35 mm raked bar SS 316 network chamber PS1 for Sewerage Network Zone 1 | 2026-12-08 → 2026-12-15 (+7d) | 2026-12-08 → 2026-12-15 (+7d) |  | 25.6d → 19.6d |
| MOD-SWN-PS-025 | Valve chamber – PS1 for Sewerage Network Zone 1 | 2026-12-09 → 2026-12-16 (+7d) | 2026-12-15 → 2026-12-22 (+7d) |  | 25.6d → 19.6d |
| MOD-SWN-PS-026 | Flow meter chamber – PS1 for Sewerage Network Zone 1 | 2026-12-16 → 2026-12-23 (+7d) | 2026-12-20 → 2026-12-27 (+7d) |  | 25.6d → 19.6d |
| MOD-SWN-PS-028 | Valve chamber – PS2 for Sewerage Network Zone 1 | 2026-12-21 → 2026-12-28 (+7d) | 2027-01-07 → 2027-01-14 (+7d) |  | 25.6d → 19.6d |
| MOD-SWN-PS-029 | Flow meter chamber – PS2 for Sewerage Network Zone 1 | 2027-01-09 → 2027-01-16 (+7d) | 2027-01-25 → 2027-02-01 (+7d) |  | 25.6d → 19.6d |
| 8 | **Odor Control System Base/Plinth** | 2026-12-03 → 2026-12-10 (+7d) | 2026-12-09 → 2026-12-16 (+7d) |  |  |
| MOD-SWN-PS-043 | Concrete plinth below odor control – All PSs for Sewerage Network Zone 1 | 2026-12-03 → 2026-12-10 (+7d) | 2026-12-09 → 2026-12-16 (+7d) |  | -7.4d → -13.4d |
| 10 | **Lighting Works** |  | 2026-12-10 → 2026-12-17 (+7d) |  |  |
| MOD-SWN-PS-052 | 250W Flood Light installation – Each PS for Sewerage Network Zone 1 |  | 2026-12-10 → 2026-12-17 (+7d) |  | 65d → 59d |
| 11 | **Duct Works** | 2026-11-30 → 2026-12-07 (+7d) | 2026-12-07 → 2026-12-14 (+7d) |  |  |
| MOD-SWN-PS-054 | uPVC duct Track 1 – All PSs for Sewerage Network Zone 1 | 2026-11-30 → 2026-12-07 (+7d) | 2026-11-30 → 2026-12-07 (+7d) |  | 64.6d → 58.6d |
| MOD-SWN-PS-055 | uPVC duct Track 2 – All PSs for Sewerage Network Zone 1 | 2026-12-01 → 2026-12-08 (+7d) | 2026-12-02 → 2026-12-09 (+7d) |  | 64.6d → 58.6d |
| MOD-SWN-PS-056 | uPVC duct Track 8 – All PSs for Sewerage Network Zone 1 | 2026-12-03 → 2026-12-10 (+7d) | 2026-12-07 → 2026-12-14 (+7d) |  | 64.6d → 58.6d |
| 12 | **Grounding Works** | 2026-12-08 → 2026-12-15 (+7d) | 2026-12-10 → 2026-12-17 (+7d) |  |  |
| MOD-SWN-PS-058 | Grounding pit – Each PS for Sewerage Network Zone 1 | 2026-12-08 → 2026-12-15 (+7d) | 2026-12-08 → 2026-12-15 (+7d) |  | 64.6d → 58.6d |
| MOD-SWN-PS-059 | 600x600 Cable pull pit – All PSs for Sewerage Network Zone 1 | 2026-12-09 → 2026-12-16 (+7d) | 2026-12-10 → 2026-12-17 (+7d) |  | 64.6d → 58.6d |
| 13 | **Landscaping / Interlocking Tiles** | 2026-11-14 → 2026-11-21 (+7d) | 2026-12-07 → 2026-12-14 (+7d) |  |  |
| MOD-SWN-PS-061 | Building perimeter interlock tiles for Sewerage Network Zone 1 | 2026-11-14 → 2026-11-21 (+7d) | 2026-12-02 → 2026-12-09 (+7d) |  | -7.4d → -13.4d |
| MOD-SWN-PS-062 | Entrance road paving tiles for Sewerage Network Zone 1 | 2026-12-03 → 2026-12-10 (+7d) | 2026-12-07 → 2026-12-14 (+7d) |  | 67.6d → 61.6d |
| 14 | **Pumping Station Internal Drainage Network** | 2026-11-14 → 2026-11-21 (+7d) | 2026-11-21 → 2026-11-28 (+7d) |  |  |
| MOD-SWN-PS-064 | Internal surface drainage channels for Sewerage Network Zone 1 | 2026-11-14 → 2026-11-21 (+7d) | 2026-11-21 → 2026-11-28 (+7d) |  | 81.6d → 75.6d |
| 12 | **Rainwater Drainage Network Zone 1** |  | 2026-12-14 → 2026-12-21 (+7d) |  |  |
| 1 | **Pipe Laying Works** |  | 2026-11-22 → 2026-11-29 (+7d) |  |  |
| 2 | **Supply & Installation of uPVC Pipes (250–300mm dia)** |  | 2026-11-17 → 2026-11-24 (+7d) |  |  |
| MOD-RWN-PL-913 | Excavation to required depth UPVC for Rainwater Drainage Network Zone 1 |  | 2026-11-15 → 2026-11-22 (+7d) | 95% → 99% | -118.25d → -125.25d |
| MOD-RWN-PL-923 | Lean Concrete / Bedding UPVC for Rainwater Drainage Network Zone 1 |  | 2026-11-15 → 2026-11-22 (+7d) | 95% → 96% | -118.25d → -125.25d |
| MOD-RWN-PL-933 | Laying of uPVC pipe UPVC for Rainwater Drainage Network Zone 1 |  | 2026-11-16 → 2026-11-23 (+7d) | 95% → 96% | -118.25d → -125.25d |
| MOD-RWN-PL-953 | Test (Pressure-slope) UPVC for Rainwater Drainage Network Zone 1 |  | 2026-11-16 → 2026-11-23 (+7d) | 90% → 95% | -118.25d → -125.25d |
| MOD-RWN-PL-943 | Coating / Wrapping UPVC for Rainwater Drainage Network Zone 1 |  | 2026-11-16 → 2026-11-23 (+7d) | 90% → 95% | -112.81d → -119.81d |
| MOD-RWN-PL-963 | Backfilling & Warning Tape UPVC for Rainwater Drainage Network Zone 1 |  | 2026-11-17 → 2026-11-24 (+7d) |  | -113.81d → -120.81d |
| 4 | **uPVC Connection Pipes (150mm dia)** |  | 2026-11-22 → 2026-11-29 (+7d) |  |  |
| MOD-RWN-PL-1043 | Lay & connect UPVC Con. for Rainwater Drainage Network Zone 1 |  | 2026-11-16 → 2026-11-23 (+7d) |  | -118.25d → -125.25d |
| MOD-RWN-PL-1053 | Test (Pressure-slope) UPVC Con. for Rainwater Drainage Network Zone 1 |  | 2026-11-17 → 2026-11-24 (+7d) |  | -118.25d → -125.25d |
| MOD-RWN-PL-1083 | Coating / Wrapping UPVC Con. for Rainwater Drainage Network Zone 1 |  | 2026-11-21 → 2026-11-28 (+7d) |  | -118.25d → -125.25d |
| MOD-RWN-PL-1063 | Backfilling & compaction UPVC Con. for Rainwater Drainage Network Zone 1 |  | 2026-11-22 → 2026-11-29 (+7d) |  | -118.25d → -125.25d |
| 5 | **Precast Concrete Box Culverts** |  | 2026-12-13 → 2026-12-20 (+7d) |  |  |
| 1 | **Box Culverts (500x500mm to 3500x800mm)** |  | 2026-12-08 → 2026-12-15 (+7d) |  |  |
| MOD-RWN-PC-003 | Excavation to required depth Box culvert for Rainwater Drainage Network Zone 1 |  | 2026-11-14 → 2026-11-21 (+7d) | 85% → 90% | -119.21d → -125.21d |
| MOD-RWN-PC-004 | Dewatering and trench shoring Box culvert for Rainwater Drainage Network Zone 1 |  | 2026-11-15 → 2026-11-22 (+7d) |  | -119.21d → -125.21d |
| MOD-RWN-PC-005 | Bedding preparation (gravel/lean concrete) Box culvert for Rainwater Drainage Network Zone 1 |  | 2026-11-16 → 2026-11-23 (+7d) |  | -119.21d → -125.21d |
| MOD-RWN-PC-006 | Installation of box culvert units Box culvert for Rainwater Drainage Network Zone 1 |  | 2026-11-21 → 2026-11-28 (+7d) |  | -119.21d → -125.21d |
| MOD-RWN-PC-007 | Alignment and joint sealing Box culvert for Rainwater Drainage Network Zone 1 |  | 2026-11-23 → 2026-11-30 (+7d) |  | -114.31d → -120.31d |
| MOD-RWN-PC-008 | Construct headwalls/wing walls (if needed) Box culvert for Rainwater Drainage Network Zone 1 | 2026-11-23 → 2026-11-30 (+7d) | 2026-11-29 → 2026-12-06 (+7d) |  | -114.31d → -120.31d |
| MOD-RWN-PC-009 | Backfilling and compaction Box culvert for Rainwater Drainage Network Zone 1 | 2026-11-29 → 2026-12-06 (+7d) | 2026-12-05 → 2026-12-12 (+7d) |  | -114.31d → -120.31d |
| MOD-RWN-PC-010 | Surface finishing Box culvert for Rainwater Drainage Network Zone 1 | 2026-12-05 → 2026-12-12 (+7d) | 2026-12-08 → 2026-12-15 (+7d) |  | -114.31d → -120.31d |
| 2 | **Tube Culverts at Road Intersections** |  | 2026-12-02 → 2026-12-09 (+7d) |  |  |
| MOD-RWN-PC-014 | Pipe bedding and twin pipe alignment Tube culvert for Rainwater Drainage Network Zone 1 |  | 2026-11-17 → 2026-11-24 (+7d) |  | -109.81d → -115.81d |

| ID | Task | Start | Finish | Complete | Total float |
| --- | --- | --- | --- | --- | --- |
| MOD-RWN-PC-015 | Pipe laying and jointing Tube culvert for Rainwater Drainage Network Zone 1 |  | 2026-11-23 → 2026-11-30 (+7d) |  | -109.81d → -115.81d |
| MOD-RWN-PC-016 | Backfilling and road reinstatement Tube culvert for Rainwater Drainage Network Zone 1 | 2026-11-23 → 2026-11-30 (+7d) | 2026-12-02 → 2026-12-09 (+7d) |  | -109.81d → -115.81d |
| 3 | **Box Culverts at Road Intersections** |  | 2026-12-13 → 2026-12-20 (+7d) |  |  |
| MOD-RWN-PC-019 | Deep trench excavation with shoring for Rainwater Drainage Network Zone 1 |  | 2026-11-14 → 2026-11-21 (+7d) |  | -118.74d → -124.74d |
| MOD-RWN-PC-020 | Place bedding material for Rainwater Drainage Network Zone 1 |  | 2026-11-15 → 2026-11-22 (+7d) | 25% → 50% | -118.74d → -124.74d |
| MOD-RWN-PC-021 | Install precast box culvert for Rainwater Drainage Network Zone 1 | 2026-11-15 → 2026-11-22 (+7d) | 2026-11-19 → 2026-11-26 (+7d) |  | -118.74d → -124.74d |
| MOD-RWN-PC-022 | Construct connection chambers (if needed) for Rainwater Drainage Network Zone 1 | 2026-11-19 → 2026-11-26 (+7d) | 2026-11-21 → 2026-11-28 (+7d) |  | -118.74d → -124.74d |
| MOD-RWN-PC-023 | Joint treatment and testing for Rainwater Drainage Network Zone 1 | 2026-11-21 → 2026-11-28 (+7d) | 2026-12-02 → 2026-12-09 (+7d) |  | -118.74d → -124.74d |
| MOD-RWN-PC-024 | Backfilling and surface reinstatement for Rainwater Drainage Network Zone 1 | 2026-12-02 → 2026-12-09 (+7d) | 2026-12-13 → 2026-12-20 (+7d) |  | -118.74d → -124.74d |
| 4 | **Manholes** |  | 2026-12-14 → 2026-12-21 (+7d) |  |  |
| 1 | **Circular GRP Manholes (1200–1800mm dia)** |  | 2026-12-05 → 2026-12-12 (+7d) |  |  |
| MOD-RWN-MH-003 | Dewatering and safety barriers Circular Manhole for Rainwater Drainage Network Zone 1 |  | 2026-11-19 → 2026-11-26 (+7d) |  | -111.16d → -117.16d |
| MOD-RWN-MH-004 | Concrete base construction Circular Manhole for Rainwater Drainage Network Zone 1 |  | 2026-11-21 → 2026-11-28 (+7d) |  | -111.16d → -117.16d |
| MOD-RWN-MH-005 | Install GRP manhole shaft sections Circular Manhole for Rainwater Drainage Network Zone 1 |  | 2026-11-26 → 2026-12-03 (+7d) |  | -111.16d → -117.16d |
| MOD-RWN-MH-006 | Place slab and cover frame Circular Manhole for Rainwater Drainage Network Zone 1 |  | 2026-11-29 → 2026-12-06 (+7d) |  | -111.16d → -117.16d |
| MOD-RWN-MH-007 | Waterproofing Circular Manhole for Rainwater Drainage Network Zone 1 |  | 2026-12-02 → 2026-12-09 (+7d) |  | -111.16d → -117.16d |
| MOD-RWN-MH-008 | Backfilling and compaction Circular Manhole for Rainwater Drainage Network Zone 1 |  | 2026-12-05 → 2026-12-12 (+7d) |  | -111.16d → -117.16d |
| 3 | **Concrete Manholes for 1500x1500 Box Pipes** |  | 2026-12-06 → 2026-12-13 (+7d) |  |  |
| MOD-RWN-MH-019 | Base slab and wall shuttering Concrete Manhole 1.5x1.5 for Rainwater Drainage Network Zone 1 |  | 2026-11-19 → 2026-11-26 (+7d) |  | -112.96d → -118.96d |
| MOD-RWN-MH-020 | Wall reinforcement and casting Concrete Manhole 1.5x1.5 for Rainwater Drainage Network Zone 1 |  | 2026-11-22 → 2026-11-29 (+7d) |  | -112.96d → -118.96d |
| MOD-RWN-MH-021 | Roof slab with openings Concrete Manhole 1.5x1.5 for Rainwater Drainage Network Zone 1 |  | 2026-11-23 → 2026-11-30 (+7d) |  | -112.96d → -118.96d |
| MOD-RWN-MH-022 | Masonry/benching works inside Concrete Manhole 1.5x1.5 for Rainwater Drainage Network Zone 1 |  | 2026-11-25 → 2026-12-02 (+7d) |  | -112.96d → -118.96d |
| MOD-RWN-MH-023 | Install cover and frame Concrete Manhole 1.5x1.5 for Rainwater Drainage Network Zone 1 |  | 2026-11-30 → 2026-12-07 (+7d) |  | -112.96d → -118.96d |
| MOD-RWN-MH-024 | Backfill in layers Concrete Manhole 1.5x1.5 for Rainwater Drainage Network Zone 1 | 2026-11-30 → 2026-12-07 (+7d) | 2026-12-06 → 2026-12-13 (+7d) |  | -112.96d → -118.96d |
| 2 | **Concrete Manholes for 1000x1000 Box Pipes** |  | 2026-12-14 → 2026-12-21 (+7d) |  |  |
| MOD-RWN-MH-010 | Excavation Concrete Manhole 1x1 for Rainwater Drainage Network Zone 1 |  | 2026-11-18 → 2026-11-25 (+7d) |  | -119.21d → -125.21d |
| MOD-RWN-MH-011 | Base slab and wall shuttering Concrete Manhole 1x1 for Rainwater Drainage Network Zone 1 |  | 2026-11-21 → 2026-11-28 (+7d) |  | -119.21d → -125.21d |
| MOD-RWN-MH-012 | Wall reinforcement and casting Concrete Manhole 1x1 for Rainwater Drainage Network Zone 1 |  | 2026-11-24 → 2026-12-01 (+7d) |  | -119.21d → -125.21d |
| MOD-RWN-MH-013 | Roof slab with openings Concrete Manhole 1x1 for Rainwater Drainage Network Zone 1 |  | 2026-11-29 → 2026-12-06 (+7d) |  | -119.21d → -125.21d |
| MOD-RWN-MH-014 | Masonry/benching works inside Concrete Manhole 1x1 for Rainwater Drainage Network Zone 1 |  | 2026-12-06 → 2026-12-13 (+7d) |  | -119.21d → -125.21d |
| MOD-RWN-MH-015 | Install cover and frame Concrete Manhole 1x1 for Rainwater Drainage Network Zone 1 | 2026-12-06 → 2026-12-13 (+7d) | 2026-12-10 → 2026-12-17 (+7d) |  | -119.21d → -125.21d |
| MOD-RWN-MH-016 | Backfill in layers Concrete Manhole 1x1 for Rainwater Drainage Network Zone 1 | 2026-12-10 → 2026-12-17 (+7d) | 2026-12-14 → 2026-12-21 (+7d) |  | -119.21d → -125.21d |
| 2 | **Chambers and Catch Basins** |  | 2026-11-21 → 2026-11-28 (+7d) |  |  |
| 2 | **Rainwater Catch Basins** |  | 2026-11-21 → 2026-11-28 (+7d) |  |  |
| MOD-RWN-CC-012 | Backfill and surface finish Catch Basin for Rainwater Drainage Network Zone 1 |  | 2026-11-21 → 2026-11-28 (+7d) |  | -99.37d → -105.37d |
| 3 | **Gully Outfalls to Swales** |  | 2026-11-24 → 2026-12-01 (+7d) |  |  |
| 1 | **Gully Outfalls to Swales** |  | 2026-11-22 → 2026-11-29 (+7d) |  |  |
| MOD-RWN-GO-004 | Place concrete apron or pipes Gully Outfall to Swales for Rainwater Drainage Network Zone 1 |  | 2026-11-21 → 2026-11-28 (+7d) |  | -100.64d → -106.64d |
| MOD-RWN-GO-005 | Provide slope protection (riprap) Gully Outfall to Swales for Rainwater Drainage Network Zone 1 |  | 2026-11-21 → 2026-11-28 (+7d) |  | -100.64d → -106.64d |
| MOD-RWN-GO-006 | Compact and shape terrain Gully Outfall to Swales for Rainwater Drainage Network Zone 1 |  | 2026-11-22 → 2026-11-29 (+7d) |  | -100.64d → -106.64d |
| 2 | **Riprap Works & Protection** |  | 2026-11-24 → 2026-12-01 (+7d) |  |  |
| MOD-RWN-GO-008 | Lay filter fabric/membrane for Rainwater Drainage Network Zone 1 |  | 2026-11-21 → 2026-11-28 (+7d) |  | -103.03d → -109.03d |
| MOD-RWN-GO-009 | Place riprap/stone layer for Rainwater Drainage Network Zone 1 |  | 2026-11-23 → 2026-11-30 (+7d) |  | -103.03d → -109.03d |
| MOD-RWN-GO-010 | Compact edges for Rainwater Drainage Network Zone 1 |  | 2026-11-24 → 2026-12-01 (+7d) |  | -103.03d → -109.03d |
| 6 | **Backfilling & Bedding** |  | 2026-11-30 → 2026-12-07 (+7d) |  |  |
| 1 | **Backfilling Materials (Type A – 201–700mm Pipes)** |  | 2026-11-24 → 2026-12-01 (+7d) |  |  |
| MOD-RWN-BB-002 | Place granular bedding under pipe for Rainwater Drainage Network Zone 1 |  | 2026-11-14 → 2026-11-21 (+7d) |  | -112.21d → -118.21d |
| MOD-RWN-BB-003 | Lay and align pipe for Rainwater Drainage Network Zone 1 |  | 2026-11-15 → 2026-11-22 (+7d) |  | -102.45d → -108.45d |
| MOD-RWN-BB-004 | Backfill up to spring line for Rainwater Drainage Network Zone 1 |  | 2026-11-15 → 2026-11-22 (+7d) |  | -102.45d → -108.45d |
| MOD-RWN-BB-005 | Compact layer-wise for Rainwater Drainage Network Zone 1 |  | 2026-11-15 → 2026-11-22 (+7d) |  | -102.45d → -108.45d |
| MOD-RWN-BB-006 | Final fill to subgrade level for Rainwater Drainage Network Zone 1 | 2026-11-17 → 2026-11-24 (+7d) | 2026-11-24 → 2026-12-01 (+7d) |  | -102.45d → -108.45d |
| 2 | **Gravel Bedding & Filter Cloth for uPVC Drain Pipes** |  | 2026-11-30 → 2026-12-07 (+7d) |  |  |
| MOD-RWN-BB-008 | Line trench with filter cloth for Rainwater Drainage Network Zone 1 |  | 2026-11-14 → 2026-11-21 (+7d) |  | -108d → -114d |
| MOD-RWN-BB-009 | Place and compact gravel bedding for Rainwater Drainage Network Zone 1 |  | 2026-11-14 → 2026-11-21 (+7d) |  | -108d → -114d |
| MOD-RWN-BB-010 | Lay pipe within gravel zone for Rainwater Drainage Network Zone 1 |  | 2026-11-14 → 2026-11-21 (+7d) |  | -108d → -114d |
| MOD-RWN-BB-011 | Wrap filter cloth above pipe for Rainwater Drainage Network Zone 1 |  | 2026-11-16 → 2026-11-23 (+7d) | 90% → 95% | -108d → -114d |
| MOD-RWN-BB-012 | Final fill and trench restoration for Rainwater Drainage Network Zone 1 | 2026-11-16 → 2026-11-23 (+7d) | 2026-11-30 → 2026-12-07 (+7d) |  | -108d → -114d |
| 13 | **Potable Water Network Zone 1** |  | 2026-12-31 → 2027-01-07 (+7d) |  |  |
| 1 | **Pipe Installation Works** |  | 2026-11-15 → 2026-11-22 (+7d) |  |  |
| MOD-PWN-PI-383 | Lean Concrete / Pipe Bedding Preparation for Potable Water Network Zone 1 |  | 2026-11-14 → 2026-11-21 (+7d) |  | 45.98d → 38.98d |
| MOD-PWN-PI-393 | HDPE Pipe Laying (200 mm to 710 mm) for Potable Water Network Zone 1 |  | 2026-11-14 → 2026-11-21 (+7d) |  | 45.98d → 38.98d |
| MOD-PWN-PI-413 | Coating / Wrapping for Potable Water Network Zone 1 |  | 2026-11-15 → 2026-11-22 (+7d) |  | 45.98d → 38.98d |
| MOD-PWN-PI-403 | Test (Pressure-slope) for Potable Water Network Zone 1 |  | 2026-11-14 → 2026-11-21 (+7d) |  | 45.98d → 38.98d |
| MOD-PWN-PI-423 | Backfilling & Warrning Tape for Potable Water Network Zone 1 |  | 2026-11-15 → 2026-11-22 (+7d) |  | 45.98d → 38.98d |
| 2 | **Valve Installation & Chambers** |  | 2026-11-16 → 2026-11-23 (+7d) |  |  |
| MOD-PWN-VC-004 | Valve Chamber Excavation for Potable Water Network Zone 1 |  | 2026-11-14 → 2026-11-21 (+7d) |  | 19.7d → 13.7d |
| MOD-PWN-VC-005 | RC Slab, Walls, or Precast Chambers for Potable Water Network Zone 1 |  | 2026-11-14 → 2026-11-21 (+7d) |  | 38.72d → 32.72d |
| MOD-PWN-VC-001 | Gate Valves (225–710 mm) for Potable Water Network Zone 1 |  | 2026-11-14 → 2026-11-21 (+7d) |  | 38.6d → 32.6d |
| MOD-PWN-VC-003 | 3-exit (2 x 2.5-inch and 1 x 4-inch) dry vacuum cylinder detachable fire nozzle for Potable Water Network Zone 1 |  | 2026-11-14 → 2026-11-21 (+7d) |  | 38.6d → 32.6d |
| MOD-PWN-VC-002 | Butterfly Valves (355, 500, 630 mm) for Potable Water Network Zone 1 |  | 2026-11-14 → 2026-11-21 (+7d) |  | 38.6d → 32.6d |

| ID | Task | Start | Finish | Complete | Total float |
| --- | --- | --- | --- | --- | --- |
| MOD-PWN-VC-006 | Fixing Covers, Gratings, Frames for Potable Water Network Zone 1 |  | 2026-11-14 → 2026-11-21 (+7d) |  | 38.6d → 32.6d |
| MOD-PWN-VC-007 | Tagging & Painting for Potable Water Network Zone 1 | 2026-11-14 → 2026-11-21 (+7d) | 2026-11-16 → 2026-11-23 (+7d) |  | 38.6d → 32.6d |
| 3 | **Flow Meter Installation** |  | 2026-12-31 → 2027-01-07 (+7d) |  |  |
| MOD-PWN-FM-002 | RC or Precast Chamber Construction for Potable Water Network Zone 1 |  | 2026-11-17 A | 60% → 100% | 19.7d → none |
| MOD-PWN-FM-003 | Flowmeter Installation & Pipe Integration for Potable Water Network Zone 1 |  | 2026-12-19 → 2026-11-21 A (-28d) | 50% → 100% | -0.35d → none |
| MOD-PWN-FM-004 | Wiring/Cabling if applicable for Potable Water Network Zone 1 | 2026-12-19 → 2026-11-16 A (-33d) | 2026-12-28 → 2027-01-04 (+7d) | 0% → 30% | -0.35d → -6.35d |
| MOD-PWN-FM-005 | Calibration & Commissioning for Potable Water Network Zone 1 | 2026-12-28 → 2027-01-04 (+7d) | 2026-12-31 → 2027-01-07 (+7d) |  | -0.35d → -6.35d |
| 4 | **Washout & Air Valve Chambers** |  | 2026-11-19 → 2026-11-26 (+7d) |  |  |
| MOD-PWN-WA-003 | Pipe Work for Potable Water Network Zone 1 |  | 2026-11-14 → 2026-11-21 A (+7d) | 93% → 100% | 36.04d → none |
| MOD-PWN-WA-004 | Washout (Valve + Outlet) Installation for Potable Water Network Zone 1 |  | 2026-11-15 → 2026-11-22 (+7d) |  | 36.04d → 30.04d |
| MOD-PWN-WA-005 | Air Valve Rooms (Valve + Outlet) Installation for Potable Water Network Zone 1 |  | 2026-11-16 → 2026-11-23 (+7d) |  | 36.04d → 30.04d |
| MOD-PWN-WA-006 | Covers, Ladders & Tags for Potable Water Network Zone 1 |  | 2026-11-16 → 2026-11-23 (+7d) |  | 36.04d → 30.04d |
| MOD-PWN-WA-007 | Backfilling & Final Finishing for Potable Water Network Zone 1 | 2026-11-16 → 2026-11-23 (+7d) | 2026-11-19 → 2026-11-26 (+7d) |  | 36.04d → 30.04d |
| 7 | **Irrigation Network Zone 1** |  | 2026-12-16 → 2026-12-23 (+7d) |  |  |
| 1 | **Excavation, Pipe Laying & Backfilling** |  | 2026-11-14 → 2026-11-21 (+7d) |  |  |
| MOD-IRN-EB-400 | Lean Concrete / Pipe Bedding with Type B Material for Irrigation Network Zone 1 |  | 2026-11-14 → 2026-11-21 (+7d) |  | 46.86d → 39.86d |
| MOD-IRN-EB-410 | HDPE Pipe Laying (125 mm to 630 mm) for Irrigation Network Zone 1 |  | 2026-11-14 → 2026-11-21 (+7d) |  | 46.86d → 39.86d |
| MOD-IRN-EB-420 | Test (Pressure-slope) for Irrigation Network Zone 1 |  | 2026-11-14 → 2026-11-21 (+7d) |  | 46.86d → 39.86d |
| MOD-IRN-EB-430 | Coating / Wrapping for Irrigation Network Zone 1 |  | 2026-11-14 → 2026-11-21 (+7d) |  | 46.86d → 39.86d |
| MOD-IRN-EB-440 | Backfilling & Warrning Tape for Irrigation Network Zone 1 |  | 2026-11-14 → 2026-11-21 (+7d) |  | 46.86d → 39.86d |
| 2 | **Valves and Appurtenances** |  | 2026-11-16 → 2026-11-23 (+7d) |  |  |
| MOD-IRN-VA-001 | Supply & Installation of Valves (Gate Valve) for Irrigation Network Zone 1 |  | 2026-11-14 → 2026-11-21 (+7d) |  | 35.55d → 29.55d |
| MOD-IRN-VA-002 | Supply & Installation of Valves (Butterfly Valve) for Irrigation Network Zone 1 |  | 2026-11-14 → 2026-11-21 (+7d) |  | 35.55d → 29.55d |
| MOD-IRN-VA-003 | Installation of Flanges, Bolts, Collars, Nuts for Irrigation Network Zone 1 |  | 2026-11-14 → 2026-11-21 (+7d) |  | 35.55d → 29.55d |
| MOD-IRN-VA-005 | Support Brackets/Anchor Blocks for Irrigation Network Zone 1 |  | 2026-11-16 → 2026-11-23 (+7d) |  | 39.34d → 33.34d |
| MOD-IRN-VA-004 | Valve Pressure Testing for Irrigation Network Zone 1 |  | 2026-11-15 → 2026-11-22 (+7d) | 60% → 70% | 39.34d → 33.34d |
| 3 | **Valve Rooms** |  | 2026-11-16 → 2026-11-23 (+7d) |  |  |
| MOD-IRN-VR-002 | Blinding Concrete Valve Chamber for Irrigation Network Zone 1 |  | 2026-11-14 → 2026-11-21 (+7d) |  | 38.56d → 32.56d |
| MOD-IRN-VR-003 | RCC Base Slab & Chamber Walls Valve Chamber for Irrigation Network Zone 1 |  | 2026-11-15 → 2026-11-22 (+7d) | 90% → 95% | 38.56d → 32.56d |
| MOD-IRN-VR-004 | Block Wall Construction (if any) Valve Chamber for Irrigation Network Zone 1 |  | 2026-11-15 → 2026-11-22 (+7d) | 88% → 90% | 38.56d → 32.56d |
| MOD-IRN-VR-005 | Installation of Valve inside the Room Valve Chamber for Irrigation Network Zone 1 |  | 2026-11-16 → 2026-11-23 (+7d) | 88% → 90% | 38.56d → 32.56d |
| MOD-IRN-VR-006 | Fixing Frame & Cover Valve Chamber for Irrigation Network Zone 1 |  | 2026-11-16 → 2026-11-23 (+7d) | 88% → 90% | 38.56d → 32.56d |
| MOD-IRN-VR-007 | Backfilling and Finishing Valve Chamber for Irrigation Network Zone 1 |  | 2026-11-16 → 2026-11-23 (+7d) | 60% → 80% | 38.56d → 32.56d |
| 4 | **Washout Chambers** |  | 2026-11-14 → 2026-11-21 (+7d) |  |  |
| MOD-IRN-WC-005 | Manhole Frame, Cover & Ladder Fixing Washout Chamber for Irrigation Network Zone 1 |  | 2026-11-14 → 2026-11-21 (+7d) |  | 40.77d → 34.77d |
| MOD-IRN-WC-006 | Backfilling & Reinstatement Washout Chamber for Irrigation Network Zone 1 |  | 2026-11-14 → 2026-11-21 (+7d) |  | 40.77d → 34.77d |
| 6 | **Flow Meter Chambers** |  | 2026-12-16 → 2026-12-23 (+7d) |  |  |
| MOD-IRN-FC-003 | Flow Meter Installation (280, 300, 500 mm) Flow Meter Chamber for Irrigation Network Zone 1 |  | 2026-12-13 → 2026-12-20 (+7d) |  | 12.75d → 6.75d |
| MOD-IRN-FC-004 | Integration with Pipework Flow Meter Chamber for Irrigation Network Zone 1 |  | 2026-12-13 → 2026-12-20 (+7d) |  | 12.75d → 6.75d |
| MOD-IRN-FC-005 | Testing & Calibration Flow Meter Chamber for Irrigation Network Zone 1 | 2026-12-13 → 2026-12-20 (+7d) | 2026-12-15 → 2026-12-22 (+7d) |  | 12.75d → 6.75d |
| MOD-IRN-FC-006 | Cover and Access Arrangement Flow Meter Chamber for Irrigation Network Zone 1 | 2026-12-15 → 2026-12-22 (+7d) | 2026-12-16 → 2026-12-23 (+7d) |  | 12.75d → 6.75d |
| 4 | **Rainwater Collection Ponds Zone 1** |  | 2027-04-13 → 2027-04-20 (+7d) |  |  |
| 10 | **Excavation for Rainwater Drainage Pond** |  | 2027-01-16 → 2027-01-21 (+5d) |  |  |
| 11 | **Deep excavation, backfill, disposal for pond formation** |  | 2027-01-16 → 2027-01-21 (+5d) |  |  |
| MOD-RCP-ER-004 | Dewater during excavation for Rainwater Collection Ponds Zone 1 |  | 2027-01-09 → 2027-01-16 (+7d) |  | 85.9d → 80.94d |
| MOD-RCP-ER-005 | Place warning tapes for Rainwater Collection Ponds Zone 1 |  | 2027-01-10 → 2027-01-16 (+6d) |  | 85.9d → 80.94d |
| MOD-RCP-ER-006 | Dispose of rock/materials to approved dump area for Rainwater Collection Ponds Zone 1 |  | 2027-01-11 → 2027-01-17 (+6d) |  | 85.9d → 80.94d |
| MOD-RCP-ER-007 | Backfill selected areas as per design for Rainwater Collection Ponds Zone 1 | 2027-01-11 → 2027-01-17 (+6d) | 2027-01-13 → 2027-01-19 (+6d) |  | 85.9d → 80.94d |
| MOD-RCP-ER-008 | Final trimming and profiling for Rainwater Collection Ponds Zone 1 | 2027-01-13 → 2027-01-19 (+6d) | 2027-01-16 → 2027-01-21 (+5d) |  | 85.9d → 80.94d |
| 1 | **General Site Preparation** |  | 2027-01-23 → 2027-01-30 (+7d) |  |  |
| MOD-RCP-GS-0043 | Transport and disposal to approved locations - Zone 1 (2 Ponds) - P3 |  | 2027-01-23 → 2027-01-30 (+7d) |  | 59.4d → 53.4d |
| MOD-RCP-GS-0033 | Earthwork excavation (other than topsoil or rock) - Zone 1 (2 Ponds) - P3 |  | 2027-01-16 → 2027-01-23 (+7d) |  | 26.35d → 20.65d |
| 2 | **Backfilling Works** |  | 2027-01-28 → 2027-02-03 (+6d) |  |  |
| MOD-RCP-BW-001 | Select material from excavation or import approved material for Rainwater Collection Ponds Zone 1 |  | 2027-01-18 → 2027-01-25 (+7d) |  | 26.35d → 20.65d |
| MOD-RCP-BW-002 | Place in layers not exceeding 300mm for Rainwater Collection Ponds Zone 1 |  | 2027-01-20 → 2027-01-26 (+6d) |  | 74.65d → 69.77d |
| MOD-RCP-BW-003 | Compact each layer to required density for Rainwater Collection Ponds Zone 1 |  | 2027-01-23 → 2027-01-28 (+5d) |  | 74.65d → 69.77d |
| MOD-RCP-BW-004 | Conduct field density tests for Rainwater Collection Ponds Zone 1 |  | 2027-01-23 → 2027-01-28 (+5d) |  | 74.65d → 69.77d |
| MOD-RCP-BW-005 | Final leveling and approval for Rainwater Collection Ponds Zone 1 | 2027-01-23 → 2027-01-28 (+5d) | 2027-01-28 → 2027-02-03 (+6d) |  | 74.65d → 69.77d |
| 12 | **Geotextile & Bedding** |  | 2027-03-21 → 2027-03-28 (+7d) |  |  |
| 13 | **Installation of geotextile lining and coarse sand bedding** |  | 2027-03-21 → 2027-03-28 (+7d) |  |  |
| MOD-RCP-GB-002 | Trim subgrade to required level for Rainwater Collection Ponds Zone 1 |  | 2027-01-21 → 2027-01-27 (+6d) |  | 26.35d → 20.65d |
| MOD-RCP-GB-003 | Lay HDPE geotextile membrane over compacted soil for Rainwater Collection Ponds Zone 1 |  | 2027-02-01 → 2027-02-08 (+7d) |  | 26.35d → 20.65d |
| MOD-RCP-GB-004 | Place 500mm thick coarse sand bedding for Rainwater Collection Ponds Zone 1 |  | 2027-02-15 → 2027-02-27 (+12d) |  | 46.29d → 40.59d |
| MOD-RCP-GB-005 | Compact and level bedding for Rainwater Collection Ponds Zone 1 | 2027-02-15 → 2027-02-27 (+12d) | 2027-03-21 → 2027-03-28 (+7d) |  | 46.29d → 40.59d |
| 4 | **Culvert Structures** |  | 2027-04-13 → 2027-04-20 (+7d) |  |  |
| 8 | **Access Roads** | 2027-01-21 → 2027-01-27 (+6d) | 2027-04-13 → 2027-04-20 (+7d) |  |  |
| 9 | **Construct 3m & 5m wide roads** | 2027-01-21 → 2027-01-27 (+6d) | 2027-04-13 → 2027-04-20 (+7d) |  |  |
| MOD-RCP-AR-002 | Clear and grade road alignment for Rainwater Collection Ponds Zone 1 | 2027-01-21 → 2027-01-27 (+6d) | 2027-01-25 → 2027-01-31 (+6d) |  | 26.35d → 20.65d |
| MOD-RCP-AR-003 | Excavate and level subgrade for Rainwater Collection Ponds Zone 1 | 2027-01-25 → 2027-01-31 (+6d) | 2027-02-15 → 2027-02-27 (+12d) |  | 26.35d → 20.65d |
| MOD-RCP-AR-004 | Place and compact subbase for Rainwater Collection Ponds Zone 1 | 2027-02-15 → 2027-02-27 (+12d) | 2027-03-21 → 2027-03-28 (+7d) |  | 26.35d → 20.65d |

| ID | Task | Start | Finish | Complete | Total float |
| --- | --- | --- | --- | --- | --- |
| MOD-RCP-AR-005 | Lay base course for Rainwater Collection Ponds Zone 1 | 2027-02-21 → 2027-03-04 (+11d) | 2027-03-31 → 2027-04-07 (+7d) |  | 26.35d → 20.65d |
| MOD-RCP-AR-006 | Apply asphalt (if applicable) or gravel surfacing for Rainwater Collection Ponds Zone 1 | 2027-03-07 → 2027-03-20 (+13d) | 2027-04-06 → 2027-04-13 (+7d) |  | 26.35d → 20.65d |
| MOD-RCP-AR-007 | Finish shoulders and install signage if required for Rainwater Collection Ponds Zone 1 | 2027-04-06 → 2027-04-13 (+7d) | 2027-04-13 → 2027-04-20 (+7d) |  | 26.35d → 20.65d |
| 3 | **Road Crossing Zone 1** | 2027-04-15 → 2027-04-22 (+7d) | 2027-10-26 → 2027-11-02 (+7d) |  |  |
| 14 | **uPVC Road Crossing Pipes** | 2027-04-15 → 2027-04-22 (+7d) | 2027-08-25 → 2027-09-01 (+7d) |  |  |
| 15 | **Installation of uPVC pipes of various diameters crossing roadways** | 2027-04-15 → 2027-04-22 (+7d) | 2027-08-25 → 2027-09-01 (+7d) |  |  |
| MOD-ROC-PV-100 | Demarcation and traffic diversion (if required) for Road Crossing Zone 1 | 2027-04-15 → 2027-04-22 (+7d) | 2027-04-21 → 2027-04-28 (+7d) |  | -85d → -91d |
| MOD-ROC-PV-110 | Saw cutting and removal of asphalt (if applicable) for Road Crossing Zone 1 | 2027-04-22 → 2027-04-29 (+7d) | 2027-05-05 → 2027-05-12 (+7d) |  | -85d → -91d |
| MOD-ROC-PV-120 | Excavation across road width to required depth for Road Crossing Zone 1 | 2027-05-06 → 2027-05-18 (+12d) | 2027-06-03 → 2027-06-10 (+7d) |  | -85d → -91d |
| MOD-ROC-PV-130 | Preparation of trench base with compacted bedding for Road Crossing Zone 1 | 2027-06-05 → 2027-06-12 (+7d) | 2027-06-21 → 2027-06-28 (+7d) |  | -85d → -91d |
| MOD-ROC-PV-140 | Laying of uPVC pipe (300mm, 315mm, 400mm, 600mm dia) for Road Crossing Zone 1 | 2027-06-22 → 2027-06-29 (+7d) | 2027-07-15 → 2027-07-22 (+7d) |  | -85d → -91d |
| MOD-ROC-PV-150 | Placement of supports and protection around the pipe for Road Crossing Zone 1 | 2027-07-17 → 2027-07-24 (+7d) | 2027-07-27 → 2027-08-03 (+7d) |  | -85d → -91d |
| MOD-ROC-PV-160 | Testing of installed pipeline for Road Crossing Zone 1 | 2027-07-28 → 2027-08-04 (+7d) | 2027-08-03 → 2027-08-10 (+7d) |  | -85d → -91d |
| MOD-ROC-PV-170 | Backfilling and compaction in layers for Road Crossing Zone 1 | 2027-08-04 → 2027-08-11 (+7d) | 2027-08-18 → 2027-08-25 (+7d) |  | -85d → -91d |
| MOD-ROC-PV-180 | Reinstatement of road surface for Road Crossing Zone 1 | 2027-08-19 → 2027-08-26 (+7d) | 2027-08-25 → 2027-09-01 (+7d) |  | -85d → -91d |
| 16 | **GRP Road Crossing Pipes** | 2027-08-10 → 2027-08-17 (+7d) | 2027-10-26 → 2027-11-02 (+7d) |  |  |
| 17 | **Installation of GRP pipes (800mm–1000mm dia) for road crossings** | 2027-08-10 → 2027-08-17 (+7d) | 2027-10-26 → 2027-11-02 (+7d) |  |  |
| MOD-ROC-GR-100 | Set out location and coordinate with road authority for Road Crossing Zone 1 | 2027-08-10 → 2027-08-17 (+7d) | 2027-08-15 → 2027-08-22 (+7d) |  | -137d → -143d |
| MOD-ROC-GR-110 | Excavate trench across road at designed depth for Road Crossing Zone 1 | 2027-08-16 → 2027-08-23 (+7d) | 2027-08-24 → 2027-08-31 (+7d) |  | -137d → -143d |
| MOD-ROC-GR-120 | Lay compacted granular bedding for Road Crossing Zone 1 | 2027-08-25 → 2027-09-01 (+7d) | 2027-09-02 → 2027-09-09 (+7d) |  | -137d → -143d |
| MOD-ROC-GR-130 | Install GRP pipe (800mm & 1000mm dia) for Road Crossing Zone 1 | 2027-09-04 → 2027-09-11 (+7d) | 2027-09-14 → 2027-09-21 (+7d) |  | -137d → -143d |
| MOD-ROC-GR-140 | Provide structural supports and closure at both ends for Road Crossing Zone 1 | 2027-09-15 → 2027-09-22 (+7d) | 2027-09-26 → 2027-10-03 (+7d) |  | -137d → -143d |
| MOD-ROC-GR-150 | Perform leak testing as per specifications for Road Crossing Zone 1 | 2027-09-27 → 2027-10-04 (+7d) | 2027-10-02 → 2027-10-09 (+7d) |  | -137d → -143d |
| MOD-ROC-GR-160 | Backfill and compact in layers for Road Crossing Zone 1 | 2027-10-03 → 2027-10-10 (+7d) | 2027-10-11 → 2027-10-18 (+7d) |  | -137d → -143d |
| MOD-ROC-GR-170 | Reinstate road surface (asphalt/concrete) for Road Crossing Zone 1 | 2027-10-12 → 2027-10-19 (+7d) | 2027-10-20 → 2027-10-27 (+7d) |  | -137d → -143d |
| MOD-ROC-GR-180 | Final inspection and approval by relevant authority for Road Crossing Zone 1 | 2027-10-21 → 2027-10-28 (+7d) | 2027-10-26 → 2027-11-02 (+7d) |  | -137d → -143d |
| 1 | **General** |  | 2027-10-17 → 2027-10-24 (+7d) |  |  |
| 3 | **Local Roads** |  | 2027-06-16 → 2027-06-23 (+7d) |  |  |
| 1 | **Bituminous Construction** | 2027-04-14 → 2027-04-21 (+7d) | 2027-05-08 → 2027-05-19 (+11d) |  |  |
| 1 | **Bituminous Foundation Layer (MC 1)** | 2027-04-14 → 2027-04-21 (+7d) | 2027-04-22 → 2027-04-29 (+7d) |  |  |
| MOD-LOR-BC-002 | Prepare subgrade for Local Roads | 2027-04-14 → 2027-04-21 (+7d) | 2027-04-18 → 2027-04-25 (+7d) |  | -46d → -52d |
| MOD-LOR-BC-003 | Apply MC 1 bituminous layer for Local Roads | 2027-04-19 → 2027-04-26 (+7d) | 2027-04-22 → 2027-04-29 (+7d) |  | -46d → -52d |
| 2 | **Bituminous Base Layer (Grade 1 - Class A, 70mm)** | 2027-04-24 → 2027-05-01 (+7d) | 2027-04-28 → 2027-05-05 (+7d) |  |  |
| MOD-LOR-BC-005 | Spread and compact bituminous mix for Local Roads | 2027-04-24 → 2027-05-01 (+7d) | 2027-04-28 → 2027-05-05 (+7d) |  | -46d → -52d |
| 3 | **Bituminous Top Layer (Grade 1 - Class A, 50mm)** | 2027-04-29 → 2027-05-06 (+7d) | 2027-05-08 → 2027-05-19 (+11d) |  |  |
| MOD-LOR-BC-007 | Apply adhesive layer (R.C) for Local Roads | 2027-04-29 → 2027-05-06 (+7d) | 2027-05-03 → 2027-05-10 (+7d) |  | -46d → -52d |
| MOD-LOR-BC-008 | Spread and compact bituminous concrete for Local Roads | 2027-05-04 → 2027-05-11 (+7d) | 2027-05-08 → 2027-05-19 (+11d) |  | -46d → -52d |
| 2 | **Precast Curbs (Type K1-D)** |  | 2027-06-16 → 2027-06-23 (+7d) |  |  |
| MOD-LOR-PC-001 | Excavation & Subgrade Preparation for Local Roads |  | 2027-05-12 → 2026-10-02 A (-222d) | 50% → 100% | -46d → none |
| MOD-LOR-PC-002 | Pour concrete base & hunching for Local Roads |  | 2027-05-22 → 2027-05-29 (+7d) | 50% → 70% | -46d → -52d |
| MOD-LOR-PC-003 | Install precast curbs for Local Roads |  | 2027-06-02 → 2027-06-09 (+7d) | 50% → 60% | -46d → -52d |
| MOD-LOR-PC-004 | Backfill & compact for Local Roads |  | 2027-06-07 → 2027-06-14 (+7d) | 50% → 60% | -46d → -52d |
| MOD-LOR-PC-005 | Finishing & Waste Disposal for Local Roads | 2027-06-08 → 2026-11-02 A (-218d) | 2027-06-16 → 2027-06-23 (+7d) | 0% → 30% | -46d → -52d |
| 2 | **Arterial Roads** |  | 2027-04-13 → 2027-04-20 (+7d) |  |  |
| 1 | **Earthworks** | 2027-01-23 → 2027-01-30 (+7d) | 2027-01-25 → 2027-02-01 (+7d) |  |  |
| MOD-ARR-EW-001 | Clear vegetation for Arterial Roads | 2027-01-23 → 2027-01-30 (+7d) | 2027-01-24 → 2027-01-31 (+7d) |  | -46d → -52d |
| MOD-ARR-EW-002 | Site Grading for Arterial Roads | 2027-01-24 → 2027-01-31 (+7d) | 2027-01-25 → 2027-02-01 (+7d) |  | -46d → -52d |
| 2 | **Precast Curbs (Type K1-D)** |  | 2027-04-13 → 2027-04-20 (+7d) |  |  |
| MOD-ARR-PC-001 | Excavation & Subgrade Prep for Arterial Roads |  | 2027-01-31 → 2027-02-08 (+8d) |  | -46d → -52d |
| MOD-ARR-PC-002 | Concrete Base & Hunching for Arterial Roads |  | 2027-02-08 → 2027-02-20 (+12d) |  | -46d → -52d |
| MOD-ARR-PC-003 | Curb Installation for Arterial Roads |  | 2027-03-16 → 2027-03-23 (+7d) |  | -46d → -52d |
| MOD-ARR-PC-004 | Backfilling & Compaction for Arterial Roads | 2027-03-17 → 2027-03-24 (+7d) | 2027-03-25 → 2027-04-01 (+7d) |  | -46d → -52d |
| MOD-ARR-PC-005 | Finishing for Arterial Roads | 2027-03-27 → 2027-04-03 (+7d) | 2027-04-04 → 2027-04-11 (+7d) |  | -46d → -52d |
| MOD-ARR-PC-006 | Waste Disposal for Arterial Roads | 2027-04-05 → 2027-04-12 (+7d) | 2027-04-13 → 2027-04-20 (+7d) |  | -46d → -52d |
| 4 | **Communications** |  | 2027-05-06 → 2027-05-18 (+12d) |  |  |
| 1 | **Ductworks** |  | 2027-04-18 → 2027-04-25 (+7d) |  |  |
| 1 | **Concrete-Protected Service Culverts (50mm, 8 Outlets)** |  | 2027-04-06 → 2027-04-13 (+7d) |  |  |
| MOD-COC-DW-002 | Trench Excavation for Communications |  | 2027-03-08 → 2027-03-21 (+13d) |  | -140.66d → -146.66d |
| MOD-COC-DW-003 | Culvert Installation & Concrete Protection for Communications |  | 2027-03-15 → 2027-03-22 (+7d) |  | -140.66d → -146.66d |
| MOD-COC-DW-004 | Backfilling & Compaction for Communications |  | 2027-03-18 → 2027-03-25 (+7d) |  | -140.66d → -146.66d |
| MOD-COC-DW-005 | Testing & Restoration for Communications |  | 2027-04-06 → 2027-04-13 (+7d) |  | 5.55d → -0.45d |
| 2 | **Road Crossing Ducts (Exit 8)** |  | 2027-04-18 → 2027-04-25 (+7d) |  |  |
| MOD-COC-DW-007 | Horizontal Directional Drilling (HDD) for Communications |  | 2027-04-08 → 2027-04-15 (+7d) |  | 5.55d → -0.45d |
| MOD-COC-DW-008 | Duct Installation & Joint Sealing for Communications |  | 2027-04-10 → 2027-04-17 (+7d) |  | 5.55d → -0.45d |
| MOD-COC-DW-009 | Asphalt/Paving Restoration for Communications |  | 2027-04-18 → 2027-04-25 (+7d) |  | 5.55d → -0.45d |
| 3 | **Manholes (Telecom, 2000x1000x1001mm)** |  | 2027-05-06 → 2027-05-18 (+12d) |  |  |
| MOD-COC-MH-002 | Concrete Works - Foundation - Wall - Roof for Communications |  | 2027-04-18 → 2027-04-25 (+7d) |  | 5.55d → -0.45d |
| MOD-COC-MH-003 | Frame/Cover Installation for Communications |  | 2027-04-18 → 2027-04-25 (+7d) |  | 5.55d → -0.45d |
| MOD-COC-MH-004 | Testing & Handover for Communications | 2027-04-18 → 2027-04-25 (+7d) | 2027-05-06 → 2027-05-18 (+12d) |  | 5.55d → -0.45d |
| 11 | **Landscape** | 2027-03-15 → 2027-03-22 (+7d) | 2027-10-17 → 2027-10-24 (+7d) |  |  |

| ID | Task | Start | Finish | Total float |
| --- | --- | --- | --- | --- |
| 1 | **Supply & Planting of Trees and Shrubs** | 2027-04-14 → 2027-04-21 (+7d) | 2027-08-12 → 2027-08-19 (+7d) |  |
| 15 | **planting of trees, shrubs, and vines** | 2027-04-14 → 2027-04-21 (+7d) | 2027-08-12 → 2027-08-19 (+7d) |  |
| MOD-LNS-PT-002 | Site demarcation and marking of plant locations for Landscape | 2027-04-14 → 2027-04-21 (+7d) | 2027-04-24 → 2027-05-01 (+7d) | -149.3d → -155.3d |
| MOD-LNS-PT-003 | Excavation of planting pits as per specification for Landscape | 2027-04-24 → 2027-05-01 (+7d) | 2027-05-12 → 2027-05-24 (+12d) | -149.3d → -155.3d |
| MOD-LNS-PT-004 | Placement of sweet soil/potting soil as required for Landscape | 2027-05-12 → 2027-05-24 (+12d) | 2027-06-10 → 2027-06-17 (+7d) | -149.3d → -155.3d |
| MOD-LNS-PT-005 | Placement of gravel bed for drainage (if applicable) for Landscape | 2027-06-10 → 2027-06-17 (+7d) | 2027-06-29 → 2027-07-06 (+7d) | -149.3d → -155.3d |
| MOD-LNS-PT-006 | Planting of Palm tree, shrubs and trees for Landscape | 2027-06-29 → 2027-07-06 (+7d) | 2027-07-06 → 2027-07-13 (+7d) | -149.3d → -155.3d |
| MOD-LNS-PT-007 | Backfilling and compacting around the plant base for Landscape | 2027-07-06 → 2027-07-13 (+7d) | 2027-07-11 → 2027-07-18 (+7d) | -94.3d → -100.3d |
| MOD-LNS-PT-008 | Installation of semi-permeable membrane (if required) for Landscape | 2027-07-11 → 2027-07-18 (+7d) | 2027-07-29 → 2027-08-05 (+7d) | -94.3d → -100.3d |
| MOD-LNS-PT-009 | Initial watering and mulching for Landscape | 2027-07-29 → 2027-08-05 (+7d) | 2027-08-08 → 2027-08-15 (+7d) | -94.3d → -100.3d |
| MOD-LNS-PT-010 | Labeling/tagging (if specified) for Landscape | 2027-08-08 → 2027-08-15 (+7d) | 2027-08-12 → 2027-08-19 (+7d) | -94.3d → -100.3d |
| 16 | **Gravel Layer and Bed Preparation** | 2027-03-15 → 2027-03-22 (+7d) | 2027-05-08 → 2027-05-19 (+11d) |  |
| 17 | **Installation of gravel layers and soil beds to support planting and drainage.** | 2027-03-15 → 2027-03-22 (+7d) | 2027-05-08 → 2027-05-19 (+11d) |  |
| MOD-LNS-GL-002 | Grading of planting areas for Landscape | 2027-03-15 → 2027-03-22 (+7d) | 2027-03-17 → 2027-03-24 (+7d) | -140.66d → -146.66d |
| MOD-LNS-GL-003 | Excavation to required depth for Landscape | 2027-03-17 → 2027-03-24 (+7d) | 2027-03-23 → 2027-03-30 (+7d) | -140.66d → -146.66d |
| MOD-LNS-GL-004 | Placement of 50mm gravel layer for green areas for Landscape | 2027-04-03 → 2027-04-10 (+7d) | 2027-04-14 → 2027-04-21 (+7d) | -149.3d → -155.3d |
| MOD-LNS-GL-005 | Placement of 150mm gravel bed for drainage network for Landscape | 2027-04-14 → 2027-04-21 (+7d) | 2027-04-21 → 2027-04-28 (+7d) | -149.3d → -155.3d |
| MOD-LNS-GL-006 | Spreading and compacting the gravel for Landscape | 2027-04-21 → 2027-04-28 (+7d) | 2027-04-28 → 2027-05-05 (+7d) | -15.3d → -21.3d |
| MOD-LNS-GL-007 | Overlay of semi-permeable membrane (if applicable) for Landscape | 2027-04-28 → 2027-05-05 (+7d) | 2027-05-03 → 2027-05-10 (+7d) | -15.3d → -21.3d |
| MOD-LNS-GL-008 | Spreading of potting soil/sweet soil as top layer for Landscape | 2027-05-03 → 2027-05-10 (+7d) | 2027-05-08 → 2027-05-19 (+11d) | -15.3d → -21.3d |
| 2 | **Landscape Irrigation System** | 2027-07-06 → 2027-07-13 (+7d) | 2027-10-17 → 2027-10-24 (+7d) |  |
| 17 | **Design, supply, and installation of irrigation lines for arterial road landscape zones.** | 2027-07-06 → 2027-07-13 (+7d) | 2027-10-17 → 2027-10-24 (+7d) |  |
| MOD-LNS-LI-002 | Approval of design and layout by Owner/Engineer for Landscape | 2027-07-06 → 2027-07-13 (+7d) | 2027-07-14 → 2027-07-21 (+7d) | -149.3d → -155.3d |
| MOD-LNS-LI-003 | Excavation for main and lateral lines for Landscape | 2027-07-14 → 2027-07-21 (+7d) | 2027-07-31 → 2027-08-07 (+7d) | -149.3d → -155.3d |
| MOD-LNS-LI-004 | Supply and installation of irrigation piping and fittings for Landscape | 2027-07-31 → 2027-08-07 (+7d) | 2027-08-07 → 2027-08-14 (+7d) | -149.3d → -155.3d |
| MOD-LNS-LI-005 | Valve box installation and controller placement for Landscape | 2027-08-07 → 2027-08-14 (+7d) | 2027-08-23 → 2027-08-30 (+7d) | -149.3d → -155.3d |
| MOD-LNS-LI-006 | Connection to water source and pump system (if applicable) for Landscape | 2027-08-23 → 2027-08-30 (+7d) | 2027-09-15 → 2027-09-22 (+7d) | -149.3d → -155.3d |
| MOD-LNS-LI-007 | Testing of the irrigation network for leaks and performance for Landscape | 2027-09-15 → 2027-09-22 (+7d) | 2027-09-19 → 2027-09-27 (+8d) | -149.3d → -155.3d |
| MOD-LNS-LI-008 | Backfilling and surface reinstatement for Landscape | 2027-09-19 → 2027-09-27 (+8d) | 2027-10-10 → 2027-10-17 (+7d) | -149.3d → -155.3d |
| MOD-LNS-LI-009 | Commissioning and operational approval for Landscape | 2027-10-10 → 2027-10-17 (+7d) | 2027-10-17 → 2027-10-24 (+7d) | -149.3d → -155.3d |
| 9 | **Testing & Commissioning & Closeout** |  | 2027-11-10 → 2027-11-17 (+7d) |  |
| 1 | **Testing & Commissioning** |  | 2027-06-27 → 2027-07-04 (+7d) |  |
| 1 | **Zone 3** |  | 2027-06-27 → 2027-07-04 (+7d) |  |
| A103610 | Testing and Commissioning for Irrigation Network Zone 3 |  | 2027-01-16 → 2027-01-23 (+7d) | 44.23d → 38.23d |
| A103590 | Testing and Commissioning for Rain Water Drainage Network Zone 3 |  | 2027-01-11 → 2027-01-18 (+7d) | 48.58d → 42.58d |
| A103600 | Testing and Commissioning for Potable Water Network Zone 3 |  | 2026-12-28 → 2027-01-04 (+7d) | 60.03d → 54.03d |
| A102060 | Testing and Commissioning for Sewerage Network Zone 3 |  | 2027-01-24 → 2027-01-28 (+4d) | 36.6d → 33.55d |
| A103620 | Testing and Commissioning for Pumping Station Zone 3 | 2027-06-02 → 2027-06-09 (+7d) | 2027-06-27 → 2027-07-04 (+7d) | -75.35d → -81.35d |
| 2 | **Zone 2** |  | 2027-01-25 → 2027-01-30 (+5d) |  |
| A103660 | Testing and Commissioning for Potable Water Network Zone 2 |  | 2027-01-06 → 2027-01-13 (+7d) | 52.05d → 46.05d |
| A103670 | Testing and Commissioning for Irrigation Network Zone 2 |  | 2026-12-24 → 2026-12-31 (+7d) | 63.15d → 57.15d |
| A103640 | Testing and Commissioning for Sewerage Network Zone 2 |  | 2027-01-25 → 2027-01-30 (+5d) | 36.16d → 32.06d |
| A103650 | Testing and Commissioning for Rain Water Drainage Network Zone 2 |  | 2026-12-29 → 2027-01-05 (+7d) | 59.37d → 53.37d |
| 3 | **Zone 1** |  | 2027-05-06 → 2027-05-18 (+12d) |  |
| A103710 | Testing and Commissioning for Potable Water Network Zone 1 |  | 2027-01-05 → 2027-01-12 (+7d) | 52.65d → 46.65d |
| A103700 | Testing and Commissioning for Rain Water Drainage Network Zone 1 |  | 2026-12-20 → 2026-12-27 (+7d) | 66.78d → 60.78d |
| A103720 | Testing and Commissioning for Irrigation Network Zone 1 |  | 2026-12-23 → 2026-12-30 (+7d) | 63.65d → 57.65d |
| A103690 | Testing and Commissioning for Sewerage Network Zone 1 |  | 2027-01-30 → 2027-02-06 (+7d) | 32.15d → 26.3d |
| A103730 | Testing and Commissioning for Pumping Station Zone 1 | 2027-04-25 → 2027-05-02 (+7d) | 2027-05-06 → 2027-05-18 (+12d) | -35.21d → -41.21d |
| 4 | **General** |  | 2027-05-08 → 2027-05-19 (+11d) |  |
| A103630 | Testing and Commissioning for Communication |  | 2027-05-08 → 2027-05-19 (+11d) | 5.55d → -0.45d |
| 2 | **As-Built** | 2027-01-23 → 2027-01-30 (+7d) | 2027-11-10 → 2027-11-17 (+7d) |  |
| HO-13 | Earthworks as-built Submittals & Approval | 2027-01-23 → 2027-01-30 (+7d) | 2027-02-23 → 2027-03-07 (+12d) | 59.4d → 53.4d |
| HO-23 | Roadworks as-built Submittals & Approval | 2027-06-17 → 2027-06-24 (+7d) | 2027-07-11 → 2027-07-18 (+7d) | -46d → -52d |
| HO-0001 | Mechanical as-built Submittals & Approval | 2027-06-27 → 2027-07-04 (+7d) | 2027-07-21 → 2027-07-28 (+7d) | -75.35d → -81.35d |
| HO-3 | Electrical as-built Submittals & Approval | 2027-06-27 → 2027-07-04 (+7d) | 2027-07-21 → 2027-07-28 (+7d) | -54.35d → -60.35d |
| HO-33 | Landscape as-built Submittals & Approval | 2027-10-17 → 2027-10-24 (+7d) | 2027-11-10 → 2027-11-17 (+7d) | -149.3d → -155.3d |
| 3 | **Handover** | 2027-07-21 → 2027-07-28 (+7d) | 2027-08-15 → 2027-08-22 (+7d) |  |
| HO-0003 | Handover & Demobilization | 2027-07-21 → 2027-07-28 (+7d) | 2027-08-15 → 2027-08-22 (+7d) | -75.35d → -81.35d |
