# Development of the Technology City in Dhahran Project Recovery -REV.00

How a schedule from Primavera P6 changed from version to version. A marks actual dates.

## Version 1 (data date 2026-06-23, saved 2026-09-03, file DHRT-01-001-Recovery BL00.R02-36.xer)

| ID | WBS | Task | Duration | Start | Finish | Predecessors | Complete | Total float |
| --- | --- | --- | --- | --- | --- | --- | --- | --- |
|  | MS | **Key Milestones** |  | 2026-01-06 | 2027-03-04 |  |  |  |
|  | CM | **Contractual Milestones** |  | 2026-01-06 | 2027-03-04 |  |  |  |
| MS-CS-PS |  | Project Commencement Date ( Site Handover ) | 0d | 2026-01-06 A | 2026-01-06 A |  | 100% |  |
| MS-CF-EBL |  | Completion of Execution Plan and Baseline Schedule | 0d | 2026-02-05 A | 2026-02-05 A | PRE-CON-MDC-20 FF, PRE-CON-MDC-10 FF, PRE-CON-MDC-20 SS | 100% |  |
| MS-CF-MOB |  | Completion of Mobilization Works | 0d | 2026-03-07 A | 2026-03-07 A | MOB-30 FF, MOB-80 FF, MOB-40 FF, MOB-50 FF, MOB-60 FF, MOB-10 FF, MOB-70 FF, PRE-CON-MDC-10 FF, PRE-CON-MDC-20 FF, PRE-CON-MDC-30 FF, PRE-CON-MDC-40 FF, PRE-CON-MDC-50 FF, PRE-CON-MDC-60 FF, PRE-CON-MDC-70 FF, PRE-CON-MDC-80 FF, MOB-30 SS | 100% |  |
| MS-CF-ENG |  | Completion of Submitting and Approval of Shopdrawing and Materials | 0d | 2026-07-20 | 2026-07-20 | PRE-CON-MDC-30 FF, PRE-CON-MDC-40 FF, PRE-CON-MDC-50 FF, PRE-CON-MDC-60 FF, PRE-CON-MDC-70 FF, PRE-CON-MDC-80 FF, ENG-SH-RD-A-100 FF, ENG-SH-RD-A-110 FF, ENG-SH-HS-A-110 FF, ENG-SH-MRK-A-110 FF, ENG-SH-TSB-A-100 FF, ENG-SH-SD-ML-A-110 FF, ENG-SH-SD-CB-A-110 FF, ENG-SH-DPO-A-120 FF, ENG-SH-SW-ML-A-110 FF, ENG-SH-TSE-ML-A-120 FF, ENG-SH-PW-ML-A-110 FF, ENG-SH-PW-FH-A-110 FF, ENG-SH-IR-ML-A-110 FF, ENG-SH-MV-A-110 FF, ENG-SH-LV-A-120 FF, ENG-SH-SL-A-110 FF, ENG-SH-CTV-A-110 FF, ENG-SH-MSN-A-120 FF, ENG-SH-TE-A-110 FF, ENG-SH-LS-A-170 FF, ENG-SH-ST-A-180 FF, ENG-SH-ST-A-190 FF, ENG-SH-SPS-A-160 FF, ENG-SH-GR-A-190 FF, ENG-SH-GR-A-200 FF, ENG-MS-SD-ML-A-110 FF, ENG-MS-SD-CB-A-110 FF, ENG-MS-DPO-A-130 FF, ENG-MS-SW-ML-A-110 FF, ENG-MS-TSE-ML-A-120 FF, ENG-MS-PW-ML-A-110 FF, ENG-MS-IR-ML-A-110 FF, ENG-MS-MV-A-110 FF, ENG-MS-MV-A-120 FF, ENG-MS-SL-A-110 FF, ENG-MS-CTV-A-110 FF, ENG-MS-TE-A-110 FF, ENG-MS-RD-A-10 FF, ENG-MS-RD-A-20 FF, ENG-MS-RD-A-30 FF, ENG-MS-RD-A-40 FF, ENG-MS-HS-A-10 FF, ENG-MS-MRK-A-10 FF, ENG-MS-TSB-A-10 FF, ENG-MS-LS-A-180 FF, ENG-MS-ST-A-190 FF, ENG-MS-ST-A-200 FF, ENG-MS-SPS-A-170 FF, ENG-MS-GR-A-210 FF, ENG-MS-GR-A-220 FF, ENG-MT-SD-ML-A-100 FF, ENG-MT-SD-ML-A-110 FF, ENG-MT-SD-CB-A-100 FF, ENG-MT-SD-CB-A-110 FF, ENG-MT-DPO-CV-A-110 FF, ENG-MT-SD-TF-A-100 FF, ENG-MT-SD-TF-A-110 FF, ENG-MT-SW-ML-A-100 FF, ENG-MT-SW-ML-A-110 FF, ENG-MT-SW-TF-A-100 FF, ENG-MT-IR-ML-A-120 FF, ENG-MT-PW-ML-A-100 FF, ENG-MT-PW-ML-A-110 FF, ENG-MT-PW-FH-A-100 FF, ENG-MT-PW-TF-A-100 FF, ENG-MT-IR-ML-A-100 FF, ENG-MT-IR-ML-A-110 FF, ENG-MT-MV-ML-A-100 FF, PRO-LV-ML-A-100 FF, PRO-LV-HC-A-100 FF, PRO-LV-DP-A-100 FF, PRO-LV-DP-A-110 FF, PRO-LV-TT-A-100 FF, ENG-MT-SL-ML-A-100 FF, ENG-MT-SL-A-100 FF, ENG-MT-SL-A-110 FF, ENG-MT-SL-A-120 FF, ENG-MT-SL-DB-A-100 FF, ENG-MT-SL-TF-A-100 FF, ENG-MT-SL-TF-A-110 FF, ENG-MT-SL-ES-A-100 FF, ENG-MT-TE-A-100 FF, ENG-MT-TE-A-110 FF, ENG-MT-CTV-A-100 FF, ENG-MT-RD-A-100 FF, ENG-MT-RD-A-110 FF, ENG-MT-RD-A-120 FF, ENG-MT-RD-A-130 FF, ENG-MT-RD-A-160 FF, ENG-MT-RD-A-170 FF, ENG-MT-RD-A-140 FF, ENG-MT-RD-A-150 FF, ENG-MT-TS-A-100 FF, ENG-MT-TS-A-110 FF, ENG-MT-IR-ML-A-140 FF, ENG-MT-IR-ML-A-150 FF, ENG-MT-SLS-CV-A-110 FF, ENG-MT-TSE-CV-A-140 FF, ENG-MT-TSE-CV-A-150 FF, ENG-MT-PS-CV-A-150 FF, ENG-MT-GR-CV-A-130 FF, ENG-MT-FE-CV-A-120 FF, ENG-MT-SPS-MC-A-110 FF, ENG-MT-TSE-MC-A-120 FF, PRE-CON-MDC-30 SS |  | 3d |
| MS-CF-SW |  | Completion of Construction Works for Sewage Network | 0d | 2026-11-04 | 2026-11-04 | PRO-R25-SW-DL-120 FF, PRO-SW-1DL-120 FF, CO-SW-MH-250 FF, PRO-RD-1DL-130 FF, PRO-R25-RD-DL-100 FF, PRO-RD-1DL-100 FF, MS-MM-140 FF, MS-MM-130 FF, ENG-SH-RD-A-100 FF, ENG-SH-RD-A-110 FF, ENG-MS-RD-A-30 FF, ENG-MS-RD-A-20 FF, ENG-MS-RD-A-10 FF, ENG-MS-RD-A-40 FF, CO-SW-ML-160 FF, CO-EW-210_R FF, PRO-SD-1DL-140 FF, PRO-R25-SD-DL-140 FF, CO-SW-MH-300 FF, PRO-R25-RD-DL-110 FF, PRO-RD-1DL-110 FF, CO-EW-220 FF, CO-SW-ML-190 FF, PRO-SW-1DL-110 FF, PRO-R25-SW-DL-110 FF, ENG-MT-SW-ML-A-100 FF, ENG-SH-SW-ML-A-110 FF, CO-EW-200 FF, ENG-MS-SW-ML-A-110 FF, PRO-R25-SD-DL-110 FF, PRO-R25-SD-DL-130 FF, PRO-SD-1DL-130 FF, PRO-SD-1DL-120 FF, ENG-MT-SD-CB-A-110 FF, ENG-SH-SD-CB-A-110 FF, ENG-MS-SD-CB-A-110 FF, PRO-SW-1DL-100 FF, PRO-R25-SW-DL-100 FF, ENG-MT-SW-ML-A-110 FF, CO-SW-MH-240 FF, CO-SW-MH-230 FF, CO-SW-MH-220 FF, CO-EW-240 FF, CO-SW-MH-210 FF, CO-SW-ML-150 FF, CO-SW-ML-140 FF, CO-EW-230 FF, PRO-SD-1DL-100 FF, PRO-R25-SD-DL-100 FF, ENG-MT-SD-ML-A-100 FF, ENG-MS-SD-ML-A-110 FF, ENG-MT-SD-ML-A-110 FF, ENG-SH-SD-ML-A-110 FF, PRO-LV-DP-1DL-100 FF, ENG-SH-MSN-A-120 FF, ENG-SH-CTV-A-110 FF, ENG-MS-CTV-A-110 FF, ENG-MT-CTV-A-100 FF, PRO-R25-SW-DL-120 SS |  | 14d |
| MS-CF-MV |  | Completion of Construction Works for Medium Voltage Network | 0d | 2026-12-13 | 2026-12-13 | CO-MV-TF-230 FF, CO-MV-TF-240 FF, CO-MV-TF-250 FF, CO-MV-TF-260 FF, CO-MV-TF-230 SS |  | 11d |
| MS-MO-20 |  | Completion of Storm Drainage Ponds | 0d | 2026-12-31 | 2026-12-31 | CO-SD-PO-110-P2 FF, CO-SD-PO-110-P1 FF, CO-SD-PO-110-P2 SS |  | 9d |
| MS-CF-IR |  | Completion of Construction Works for Irrigation Network | 0d | 2027-01-06 | 2027-01-06 | CO-IR-TF-170 FF, CO-IR-TF-180, CO-IR-TF-210 FF, CO-PW-TF-110 FF, CO-PW-TF-130 FF, ENG-MT-IR-ML-A-110 FF, PRO-IR-1DL-110 FF, PRO-R25-IR-DL-110 FF, PRO-IR-1DL-100 FF, CO-PW-ML-110 FF, PRO-R25-IR-DL-100 FF, ENG-SH-IR-ML-A-110 FF, ENG-MS-IR-ML-A-110 FF, ENG-MT-IR-ML-A-100 FF, CO-PW-ML-100 FF, CO-EW-200 FF, MS-MM-130 FF, MS-MM-140 FF, CO-IR-ML-190 FF, CO-IR-ML-170 FF, CO-IR-ML-160 FF, CO-EW-240 FF, CO-IR-ML-150 FF, CO-SW-MH-250 FF, CO-SW-MH-240 FF, CO-SW-MH-230 FF, PRO-SW-1DL-110 FF, PRO-R25-SW-DL-110 FF, CO-SW-MH-220 FF, ENG-MT-SW-ML-A-100 FF, ENG-SH-SW-ML-A-110 FF, ENG-MS-SW-ML-A-110 FF, CO-SD-MH-380 FF, CO-SD-ML-250 FF, CO-SW-MH-210 FF, CO-SD-CB-200 FF, PRO-R25-SD-DL-110 FF, PRO-R25-SD-DL-130 FF, PRO-SD-1DL-130 FF, PRO-SD-1DL-120 FF, CO-SD-CB-190 FF, ENG-MT-SD-CB-A-110 FF, ENG-SH-SD-CB-A-110 FF, ENG-MS-SD-CB-A-110 FF, CO-SD-CB-180 FF, CO-SW-ML-160 FF, PRO-SW-1DL-100 FF, PRO-R25-SW-DL-100 FF, CO-SW-ML-150 FF, ENG-MT-SW-ML-A-110 FF, CO-SW-ML-140 FF |  | 30d |
| MS-CF-LO |  | Completion of Construction Works for Low Voltage Network | 0d | 2027-01-06 | 2027-01-06 | CON-LV-ML-120 FF, CON-LV-HC-120 FF, CON-LV-DP-120 FF, CON-LV-TT-110 FF, CON-LV-TT-100 FF, CON-LV-ES-100 FF, CON-LV-ML-150 FF, CON-LV-HC-150 FF, CON-LV-TT-120 FF, CON-LV-ML-180 FF, CON-LV-HC-180 FF, CON-LV-DP-180 FF, CON-LV-TT-150 FF, CON-LV-TT-140 FF, CON-LV-ES-120 FF, CON-LV-ML-210 FF, CON-LV-HC-210 FF, CON-LV-TT-160 FF, CON-LV-ML-240 FF, CON-LV-HC-240 FF, CON-LV-DP-240 FF, CON-LV-TT-190 FF, CON-LV-TT-180 FF, CON-LV-ES-140 FF, PRO-LV-DP-1DL-100 FF, PRO-LV-DP-DL-100 FF, CON-LV-DP-130 FF, PRO-LV-TT-1DL-100 FF, PRO-LV-TT-DL-100 FF, CO-MV-TF-230 FF, PRO-LV-DP-1DL-110 FF, PRO-LV-DP-DL-120 FF, CON-LV-DP-190 FF, CON-LV-DP-110 FF, CO-MV-TF-250 FF, CON-LV-ML-120 SS |  | 30d |
| MS-CF-PW |  | Completion of Construction Works for Potable Water Network | 0d | 2027-01-06 | 2027-01-06 | CO-PW-TF-120 FF, CO-PW-TF-140 FF, CO-PW-TF-170 FF, CO-PW-TF-200 FF, CO-PW-TF-120 SS |  | 30d |
| MS-CF-RD |  | Completion of Construction Works for Road Works | 0d | 2027-01-06 | 2027-01-06 | CO-RD-F-TS-120 FF, CO-RD-F-TS-130 FF, CO-RD-F-TS-150 FF, CO-RD-F-TS-170 FF, CO-RD-F-TS-180 FF, CO-RD-F-TS-190, CO-RD-F-TS-200 FF |  | 29d |
| MS-CF-SD |  | Completion of Construction Works for Storm Drainage Network | 0d | 2027-01-06 | 2027-01-06 | CO-SD-MH-TF-210 FF, CO-SD-MH-TF-230 FF, CO-SD-ML-TF-130 FF, CO-SD-MH-220 FF, PRO-SD-1DL-100 FF, CO-SD-MH-200 FF, PRO-R25-SD-DL-100 FF, CO-SD-MH-190 FF, ENG-MT-SD-ML-A-100 FF, CO-EW-230 FF, ENG-MS-SD-ML-A-110 FF, ENG-MT-SD-ML-A-110 FF, ENG-SH-SD-ML-A-110 FF, MS-MM-130 FF, MS-MM-140 FF, CO-SD-MH-180 FF, PRO-SD-1DL-140 FF, PRO-R25-SD-DL-140 FF, CO-SD-MH-260 FF, PRO-R25-RD-DL-170 FF, PRO-RD-1DL-130 FF, PRO-R25-RD-DL-100 FF, PRO-RD-1DL-100 FF, ENG-SH-RD-A-100 FF, ENG-SH-RD-A-110 FF, ENG-MS-RD-A-30 FF, ENG-MS-RD-A-20 FF, ENG-MS-RD-A-10 FF, ENG-MS-RD-A-40 FF, CO-TE-MH-190 FF, CO-TE-DW-160 FF, CO-SL-CL-300 FF, CO-SL-LP-380 FF, CON-LV-HC-150 FF, CON-LV-ML-150 FF, CO-MV-ML-300 FF, CO-IR-ML-180 FF, CO-PW-FH-190 FF, CO-PW-VC-250 FF, CO-PW-ML-160 FF, CO-TSE-ML-230 FF, CO-SW-ML-160 FF, CO-SW-MH-250 FF, CO-SD-CB-200 FF, CO-SD-ML-160 FF, CO-EW-210_R FF, CO-SL-LP-520 FF, PRO-R25-RD-DL-110 FF, PRO-RD-1DL-110 FF, CO-IR-TF-210 FF, CO-TE-CTV-210 FF, CO-SD-ML-220 FF, CO-PW-ML-220 FF, CO-PW-VC-310 FF, CO-TSE-ML-330 FF, CO-MV-ML-360 FF, CO-SL-LP-480 FF, CO-SL-CL-360 FF, CON-LV-HC-210 FF, CON-LV-ML-210 FF, CO-TE-DW-240 FF, CO-PW-FH-250 FF, CO-TE-MH-250 FF, CO-RD-PB-140 FF, CO-IR-ML-380 FF, CO-SD-ML-130 FF, PRO-R25-SD-DL-110 FF, PRO-R25-SD-DL-130 FF, PRO-SD-1DL-130 FF, PRO-SD-1DL-120 FF, ENG-MT-SD-CB-A-110 FF, ENG-SH-SD-CB-A-110 FF, ENG-MS-SD-CB-A-110 FF, ENG-MT-SW-ML-A-100 FF, ENG-SH-SW-ML-A-110 FF, ENG-MS-SW-ML-A-110 FF, PRO-SW-1DL-100 FF, ENG-MT-SW-ML-A-110 FF, PRO-LV-DP-1DL-100 FF, PRO-LV-DP-DL-100 FF, CON-LV-DP-120 FF, CON-LV-DP-190 FF, CON-LV-DP-110 FF, ENG-SH-MSN-A-120 FF, ENG-SH-CTV-A-110 FF, ENG-MS-CTV-A-110 FF, ENG-MT-CTV-A-100 FF, PRO-CTV-1DL-100 FF, CO-TE-MH-160 FF, CO-TE-CTV-110 FF, CO-SD-MH-TF-210 SS |  | 30d |
| MS-CF-SL |  | Completion of Construction Works for Street Lighting Network | 0d | 2027-01-06 | 2027-01-06 | CO-SL-LP-370 FF, CO-SL-ES-250 FF, CO-SL-LP-380 FF, CO-SL-CL-300 FF, ENG-MT-SL-DB-A-100 FF, CO-EW-210_R FF, MS-MM-130 FF, MS-MM-140 FF, PRO-R25-SL-DL-170 FF, CO-SL-DB-340 FF, CO-SL-LP-420 FF, CO-SL-LP-580 FF, CO-SL-ES-330 FF, PRO-R25-SL-DL-160 FF, CO-SL-LP-570 FF, CO-SL-CL-420 FF, CO-EW-200 FF, CO-SL-LP-530 FF, CO-SL-ES-310, CO-SL-LP-520 FF, CO-SL-CL-390 FF, CO-EW-240 FF, CO-SL-LP-470 FF, CO-SL-ES-290 FF, CO-SL-LP-480 FF, CO-SL-CL-360 FF, CO-EW-230 FF |  | 30d |
| MS-CF-TE |  | Completion of Construction Works for Telecom and Light Current Networks | 0d | 2027-01-06 | 2027-01-06 | CO-TE-CTV-TF-140 FF, CO-TE-CTV-TF-180 FF, CO-TE-CTV-TF-220 FF, CO-TE-CTV-TF-260 FF, CO-TE-CTV-TF-310 FF, CO-TE-CTV-TF-320 FF, CO-TE-CTV-TF-330 FF, CO-TE-CTV-TF-340 FF, CO-TE-CTV-TF-350 FF, CO-TE-CTV-TF-360 FF, CO-TE-CTV-240 FF, CO-TE-CTV-TF-140 SS |  | 30d |
| MS-CF-TSE |  | Completion of Construction Works for Treated Sewage Effluent Network | 0d | 2027-01-24 | 2027-01-24 | CO-TSE-TF-170 FF, CO-TSE-TF-180 FF, CO-TSE-TF-190 FF, CO-TSE-TF-200 FF, CO-TSE-TF-210 FF, CO-TSE-TF-170 SS |  | 34d |
| MS-MO-60 |  | Completion of Irrigation and Potable Tank | 0d | 2027-02-07 | 2027-02-07 | CO-UB-PWT-110 FF, CO-UB-PWT-150 FF, CO-UB-IRT-150 FF, CO-UB-IRT-190 FF, CO-UB-PWT-170 FF, CO-UB-PS-320 FF, CO-UB-IRT-210 FF, PRO-TSE-LL-MSI-30 FF, CO-UB-PWT-110 SS |  | 22d |
| MS-MO-50 |  | Completion of Water Pump Station | 0d | 2027-02-10 | 2027-02-10 | CO-UB-PS-390 FF, CO-UB-PS-320 FF, CO-UB-PS-250 FF, CO-UB-PS-160 FF, PRO-LS-LL-MSI-20 FF, CO-UB-PS-280 FF, CO-UB-PS-390 SS |  | 0d |
| MS-MO-10 |  | Completion of Sewage Pump Station | 0d | 2027-02-28 | 2027-02-28 | CO-UB-LS-280 FF, CO-UB-LS-370 FF, CO-UB-LS-390 FF, PRO-SPS-LL-MSI-10 FF, MS-CF-PW FF, CO-UB-PS-390 FF, CO-UB-LS-280 SS |  | 4d |
| MS-MO-40 |  | Completion of Control Room | 0d | 2027-03-03 | 2027-03-03 | T/C-CTV10 FF, T/C-CTV10 SS |  | 1d |
| MS-CF-PF |  | Project Completion Date | 0d | 2027-03-04 | 2027-03-04 | CO-SD-PO-110-P2 FF, MS-CF-PW FF, MS-CF-IR FF, MS-CF-SW FF, MS-CF-SD FF, MS-CF-TSE FF, MS-CF-MV FF, MS-CF-SL FF, MS-CF-TE FF, MS-CF-RD FF, MS-MO-20 FF, MS-MO-60 FF, MS-MO-40 FF, MS-MO-50 FF, MS-MO-10 FF, MS-CF-EBL FF, MS-CF-ENG FF, CO-LS-SF-170 FF, T/C-CTV FF, HO-130 FF, HO-200 FF, HO-100 FF, HO-180 FF, HO-190 FF, HO-150 FF, HO-160 FF, HO-170 FF, HO-210 FF, HO-140 FF, HO-120 FF, HO-220 FF, HO-230 FF, HO-110 FF, HO-250 FF, HO-260 FF, HO-270 FF, HO-240 FF, HO-280 FF, MS-CF-LO FF, T/C-CTV10 FF, T/C-CTV20 FF, CO-SD-PO-110-P2 SS |  | 0d |
|  | CM1 | **Control Milestones** |  | 2026-01-06 | 2026-06-23 |  |  |  |
|  | 2 | **The Employer** |  | 2026-02-03 | 2026-06-23 |  |  |  |
| MS-MM-100 |  | Right of Access and Possession of the Site | 0d | 2026-02-03 A | 2026-02-03 A | MS-CS-PS FF, MS-CS-PS SS | 100% |  |
| MS-MM-130 |  | Receipt the Site Benchmark Coordinates (Original Point) From The Employer | 0d | 2026-02-03 A | 2026-02-03 A | MS-MM-100 FF, MS-MM-100 SS | 100% |  |
| MS-MM-140 |  | Receipt the Site Levels Details From The Employer | 0d | 2026-02-03 A | 2026-02-03 A | MS-MM-130 FF, MS-MM-130 SS | 100% |  |
| MS-MM-150 |  | Receipt of Approved Concept Master Plan for the Project From the Employer | 0d | 2026-02-03 A | 2026-02-03 A | MS-MM-100 FF, MS-MM-100 SS | 100% |  |
| MS-MM-160 |  | Receipt of Master Plan Approval Letter for the Project From the Employer | 0d | 2026-02-03 A | 2026-02-03 A | MS-MM-100 FF, MS-MM-100 SS | 100% |  |
| MS-MM-120 |  | Receipt of Advance Payment for the Project From The Employer | 0d | 2026-06-23 | 2026-06-23 | MS-MM-100 FF, MS-MM-100 SS |  | 8d |
|  | 1 | **NOC's** |  | 2026-01-06 | 2026-01-06 |  |  |  |
|  | INF | **Infrastructure Networks** |  | 2026-01-06 | 2026-01-06 |  |  |  |
| MS-CS-IR |  | Receipt of Approval NOC From Relevant Authorities For Irrigation Network | 0d | 2026-01-06 A | 2026-01-06 A | MS-CS-PS SS | 100% |  |
| MS-CS-LV |  | Receipt of Approval NOC From Relevant Authorities For Low Voltage Network | 0d | 2026-01-06 A | 2026-01-06 A | MS-CS-PS SS | 100% |  |
| MS-CS-MV |  | Receipt of Approval NOC From Relevant Authorities For Medium Voltage Network | 0d | 2026-01-06 A | 2026-01-06 A | MS-CS-PS SS | 100% |  |
| MS-CS-PW |  | Receipt of Approval NOC From Relevant Authorities For Potable Water Network | 0d | 2026-01-06 A | 2026-01-06 A | MS-CS-PS SS | 100% |  |
| MS-CS-RD |  | Receipt of Approval NOC From Relevant Authorities For Roads Network | 0d | 2026-01-06 A | 2026-01-06 A | MS-CS-PS SS | 100% |  |
| MS-CS-SD |  | Receipt of Approval NOC From Relevant Authorities For Storm Network | 0d | 2026-01-06 A | 2026-01-06 A | MS-CS-PS SS | 100% |  |
| MS-CS-SL |  | Receipt of Approval NOC From Relevant Authorities For Street Lighting Network | 0d | 2026-01-06 A | 2026-01-06 A | MS-CS-PS SS | 100% |  |
| MS-CS-SW |  | Receipt of Approval NOC From Relevant Authorities For Sewage Network | 0d | 2026-01-06 A | 2026-01-06 A | MS-CS-PS SS | 100% |  |
| MS-CS-TE |  | Receipt of Approval NOC From Relevant Authorities For Telecom and Light Current Network | 0d | 2026-01-06 A | 2026-01-06 A | MS-CS-PS SS | 100% |  |
| MS-CS-TSE |  | Receipt of Approval NOC From Relevant Authorities For Treated Sewage Effluent Network | 0d | 2026-01-06 A | 2026-01-06 A | MS-CS-PS SS | 100% |  |
|  | SU | **Superstructure Works** |  | 2026-01-06 | 2026-01-06 |  |  |  |
| MS-CS-IR10 |  | Receipt of Approval NOC From Relevant Authorities For Sewage Pump Station | 0d | 2026-01-06 A | 2026-01-06 A | MS-CS-PS SS | 100% |  |
| MS-CS-LV10 |  | Receipt of Approval NOC From Relevant Authorities For Boundary Fence | 0d | 2026-01-06 A | 2026-01-06 A | MS-CS-PS SS | 100% |  |
| MS-CS-MV10 |  | Receipt of Approval NOC From Relevant Authorities For Water Pump Station | 0d | 2026-01-06 A | 2026-01-06 A | MS-CS-PS SS | 100% |  |
| MS-CS-SL10 |  | Receipt of Approval NOC From Relevant Authorities For Storm Drainage Ponds | 0d | 2026-01-06 A | 2026-01-06 A | MS-CS-PS SS | 100% |  |
| MS-CS-TE10 |  | Receipt of Approval NOC From Relevant Authorities For Storage Tank (TSE) | 0d | 2026-01-06 A | 2026-01-06 A | MS-CS-PS SS | 100% |  |
| MS-CS-TE20 |  | Receipt of Approval NOC From Relevant Authorities For Control Room | 0d | 2026-01-06 A | 2026-01-06 A | MS-CS-PS SS | 100% |  |
| MS-CS-TSE10 |  | Receipt of Approval NOC From Relevant Authorities For Gaurd Room | 0d | 2026-01-06 A | 2026-01-06 A | MS-CS-PS SS | 100% |  |
|  | MM | **Intermediate Milestones** |  |  |  |  |  |  |
|  | MOB | **Preliminaries and Mobilization Works** |  | 2026-01-06 | 2026-04-11 |  |  |  |
|  | MOB | **Mobilization Works** |  | 2026-01-06 | 2026-04-11 |  |  |  |
| MOB-10 |  | Clear and Grub for Offices and Access Roads | 14d | 2026-01-06 A | 2026-01-20 A | MS-CS-PS SS, MS-CS-PS FF | 100% |  |
| MOB-20 |  | Project Site Layout Plan Approval | 7d | 2026-01-21 A | 2026-01-27 A | MS-CS-PS SS, MOB-10 | 100% |  |
| MOB-80 |  | Construction Site Access Roads | 17d | 2026-01-28 A | 2026-02-15 A | MOB-20, MS-CS-PS SS | 100% |  |
| MOB-50 |  | Mobilization of Major Manpower | 6d | 2026-02-12 A | 2026-02-26 A | MOB-40 SS, MS-CS-PS SS, MOB-30 | 100% |  |
| MOB-60 |  | Mobilization of Major Equipments | 6d | 2026-02-12 A | 2026-03-07 A | MS-CS-PS SS, MOB-30 | 100% |  |
| MOB-30 |  | Supply & Install of Temporary Offices for the Project | 9d | 2026-04-01 A | 2026-04-09 A | MS-CS-PS SS, MOB-20 | 100% |  |
| MOB-40 |  | Construction Project Store | 10d | 2026-04-01 A | 2026-04-11 A | MS-CS-PS SS, MOB-20 | 100% |  |
| MOB-70 |  | Installation Project Sign Board | 10d | 2026-04-01 A | 2026-04-11 A | MOB-10 SS, MS-CS-PS SS, MOB-20 | 100% |  |
|  | 1 | **Project Main Documents From The Contractor** |  | 2026-01-06 | 2026-02-05 |  |  |  |
| PRE-CON-MDC-10 |  | Submission Project Execution Plan | 28d | 2026-01-06 A | 2026-02-05 A | MS-CS-PS SS | 100% |  |
| PRE-CON-MDC-20 |  | Submission Project Baseline Schedule | 28d | 2026-01-06 A | 2026-02-05 A | MS-CS-PS SS | 100% |  |
| PRE-CON-MDC-30 |  | Submission Project Health & Safety Plan | 28d | 2026-01-06 A | 2026-02-05 A | MS-CS-PS SS | 100% |  |
| PRE-CON-MDC-40 |  | Submission Project Quality Control Plan | 28d | 2026-01-06 A | 2026-02-05 A | MS-CS-PS SS | 100% |  |
| PRE-CON-MDC-50 |  | Submission Project Surveying Report | 28d | 2026-01-06 A | 2026-02-05 A | MS-CS-PS SS | 100% |  |
| PRE-CON-MDC-60 |  | Submission Project Geotechnical Soil Report | 28d | 2026-01-06 A | 2026-02-05 A | MS-CS-PS SS | 100% |  |
| PRE-CON-MDC-70 |  | Submission Project Environmental Plan | 28d | 2026-01-06 A | 2026-02-05 A | MS-CS-PS SS | 100% |  |
| PRE-CON-MDC-80 |  | Submission Project Organization Chart and Communications Plan | 28d | 2026-01-06 A | 2026-02-05 A | MS-CS-PS SS | 100% |  |

| ID | WBS | Task | Duration | Start | Finish | Predecessors | Complete |
| --- | --- | --- | --- | --- | --- | --- | --- |
|  | ENG | **Engineering Works** |  | 2026-01-06 | 2026-07-20 |  |  |
|  | SD | **Shop Drawings** |  | 2026-01-06 | 2026-02-04 |  |  |
|  | INF | **Infrastructure Networks** |  | 2026-01-06 | 2026-02-04 |  |  |
|  | RD | **Road Works** |  | 2026-01-06 | 2026-02-04 |  |  |
|  | 1 | **General Road Works** |  | 2026-01-06 | 2026-01-28 |  |  |
| ENG-SH-RD-S-100 |  | Submission Shop Drawings for Plan and Profile of Road Works | 5d | 2026-01-06 A | 2026-01-10 A | MS-CS-PS SS, MS-MM-100, MS-MM-130, MS-MM-140, MS-MM-150, MS-MM-160, MS-CS-RD SS, MS-CS-RD FF | 100% |
| ENG-SH-RD-A-100 |  | Approval Shop Drawings for Plan and Profile of Road Works | 7d | 2026-01-11 A | 2026-01-17 A | ENG-SH-RD-S-100 | 100% |
| ENG-SH-RD-S-110 |  | Submission Shop Drawings for Roads Typical Sections and Pavement Details | 5d | 2026-01-18 A | 2026-01-21 A | MS-CS-PS SS, MS-MM-100, MS-MM-130, MS-MM-140, MS-MM-150, MS-MM-160, ENG-SH-RD-A-100, MS-CS-RD SS, MS-CS-IR SS, MS-CS-MV SS, MS-CS-SL SS, MS-CS-TE SS, MS-CS-LV SS, MS-CS-IR10 SS, MS-CS-SL10 SS, MS-CS-TSE10 SS, MS-CS-LV10 SS, MS-CS-TE20 SS | 100% |
| ENG-SH-RD-A-110 |  | Approval Shop Drawings for Roads Typical Sections and Pavement Details | 7d | 2026-01-22 A | 2026-01-28 A | ENG-SH-RD-S-110 | 100% |
|  | 10 | **Landscape Works** |  | 2026-01-22 | 2026-02-04 |  |  |
| ENG-SH-HS-S-100 |  | Submission Shop Drawings for Landscape Works | 7d | 2026-01-22 A | 2026-01-28 A | MS-CS-PS SS, MS-MM-100, MS-MM-130, MS-MM-140, MS-MM-150, MS-MM-160, MS-CS-RD SS, ENG-SH-RD-S-100, ENG-SH-RD-S-110 | 100% |
| ENG-SH-HS-A-110 |  | Approval Shop Drawings for Landscape Works | 7d | 2026-01-29 A | 2026-02-04 A | ENG-SH-HS-S-100 | 100% |
|  | 11 | **Traffic Sign Boards and Road Marking** |  | 2026-01-22 | 2026-02-04 |  |  |
| ENG-SH-MRK-S-110 |  | Submission Shop Drawings for Road Markings | 7d | 2026-01-22 A | 2026-01-28 A | MS-CS-PS SS, MS-MM-100, MS-MM-130, MS-MM-140, MS-MM-150, MS-MM-160, MS-CS-RD SS, ENG-SH-RD-S-100, ENG-SH-RD-S-110 | 100% |
| ENG-SH-TSB-S-100 |  | Submission Shop Drawings for Traffic Signs Boards | 7d | 2026-01-22 A | 2026-01-28 A | MS-CS-PS SS, MS-MM-100, MS-MM-130, MS-MM-140, MS-MM-150, MS-MM-160, MS-CS-RD SS, ENG-SH-RD-S-100, ENG-SH-RD-S-110 | 100% |
| ENG-SH-MRK-A-110 |  | Approval Shop Drawings for Road Markings | 7d | 2026-01-29 A | 2026-02-04 A | ENG-SH-MRK-S-110 | 100% |
| ENG-SH-TSB-A-100 |  | Approval Shop Drawings for Traffic Signs Boards | 7d | 2026-01-29 A | 2026-02-04 A | ENG-SH-TSB-S-100 | 100% |
|  | ST | **Storm Drainage Network** |  | 2026-01-22 | 2026-02-04 |  |  |
|  | 1 | **Main Line Sections** |  | 2026-01-22 | 2026-02-04 |  |  |
| ENG-SH-SD-ML-S-100 |  | Submission Shop Drawings for Main Line and Manholes of Storm Drainage Network | 7d | 2026-01-22 A | 2026-01-28 A | MS-CS-PS SS, MS-MM-100, MS-MM-130, MS-MM-140, MS-MM-150, MS-MM-160, MS-CS-SD SS, ENG-SH-RD-S-100, ENG-SH-RD-S-110 | 100% |
| ENG-SH-SD-ML-A-110 |  | Approval Shop Drawings for Main Line and Manholes of Storm Drainage Network | 7d | 2026-01-29 A | 2026-02-04 A | ENG-SH-SD-ML-S-100 | 100% |
|  | 2 | **Catch Basin Sections** |  | 2026-01-22 | 2026-02-04 |  |  |
| ENG-SH-SD-CB-S-100 |  | Submission Shop Drawings for Secondary Line and Catch Basin of Storm Drainage Network | 7d | 2026-01-22 A | 2026-01-28 A | MS-CS-PS SS, MS-MM-100, MS-MM-130, MS-MM-140, MS-MM-150, MS-MM-160, ENG-SH-RD-S-100, ENG-SH-RD-S-110 | 100% |
| ENG-SH-SD-CB-A-110 |  | Approval Shop Drawings for Secondary Line and Catch Basin of Storm Drainage Network | 7d | 2026-01-29 A | 2026-02-04 A | ENG-SH-SD-CB-S-100 | 100% |
|  | PO | **Storm Drainage Ponds** |  | 2026-01-22 | 2026-01-28 |  |  |
| ENG-SH-DPO-S-110 |  | Submission Shop Drawings Package for Storm Drainage Ponds | 4d | 2026-01-22 A | 2026-01-25 A | MS-CS-PS SS, MS-MM-100, MS-MM-130, MS-MM-140, MS-MM-150, MS-MM-160, MS-CS-SL10 SS, ENG-SH-RD-S-100, ENG-SH-RD-S-110 | 100% |
| ENG-SH-DPO-A-120 |  | Approval Shop Drawings Package for Storm Drainage Ponds | 4d | 2026-01-26 A | 2026-01-28 A | ENG-SH-DPO-S-110 | 100% |
|  | SW | **Sewage Network** |  | 2026-01-22 | 2026-02-04 |  |  |
|  | 1 | **Main Line Sections** |  | 2026-01-22 | 2026-02-04 |  |  |
| ENG-SH-SW-ML-S-100 |  | Submission Shop Drawings for Main Line and Manholes of Sewage Network | 7d | 2026-01-22 A | 2026-01-28 A | MS-CS-PS SS, MS-MM-100, MS-MM-130, MS-MM-140, MS-MM-150, MS-MM-160, MS-CS-SW SS, ENG-SH-RD-S-100, ENG-SH-RD-S-110, MS-CS-SW FF | 100% |
| ENG-SH-SW-ML-A-110 |  | Approval Shop Drawings for Main Line and Manholes of Sewage Network | 7d | 2026-01-29 A | 2026-02-04 A | ENG-SH-SW-ML-S-100 | 100% |
|  | TSE | **Treated Sewage Effluent Network** |  | 2026-01-22 | 2026-02-04 |  |  |
| ENG-SH-TSE-ML-S-110 |  | Submission Shop Drawings for Main Line Treated Sewage Effluent Network | 7d | 2026-01-22 A | 2026-01-28 A | MS-CS-PS SS, MS-MM-100, MS-MM-130, MS-MM-140, MS-MM-150, MS-MM-160, MS-CS-TSE SS, ENG-SH-RD-S-100, ENG-SH-RD-S-110 | 100% |
| ENG-SH-TSE-ML-A-120 |  | Approval Shop Drawings for Main Line Treated Sewage Effluent Network | 7d | 2026-01-29 A | 2026-02-04 A | ENG-SH-TSE-ML-S-110 | 100% |
|  | PW | **Potable Water Network** |  | 2026-01-22 | 2026-02-04 |  |  |
|  | 1 | **Main Line Sections** |  | 2026-01-22 | 2026-02-04 |  |  |
| ENG-SH-PW-ML-S-100 |  | Submission Shop Drawings for Main Line and Valve Chambers of Potable Water Network | 7d | 2026-01-22 A | 2026-01-28 A | MS-CS-PS SS, MS-MM-100, MS-MM-130, MS-MM-140, MS-MM-150, MS-MM-160, MS-CS-PW SS, ENG-SH-RD-S-100, ENG-SH-RD-S-110 | 100% |
| ENG-SH-PW-ML-A-110 |  | Approval Shop Drawings for Main Line and Valve Chambers of Potable Water Network | 7d | 2026-01-29 A | 2026-02-04 A | ENG-SH-PW-ML-S-100 | 100% |
|  | 2 | **Fire Hydrant** |  | 2026-01-22 | 2026-02-04 |  |  |
| ENG-SH-PW-FH-S-100 |  | Submission Shop Drawings for Fire Hydrant Network | 7d | 2026-01-22 A | 2026-01-28 A | MS-CS-PS SS, MS-MM-100, MS-MM-130, MS-MM-140, MS-MM-150, MS-MM-160, MS-CS-PW SS, ENG-SH-RD-S-100, ENG-SH-RD-S-110 | 100% |
| ENG-SH-PW-FH-A-110 |  | Approval Shop Drawings for Fire Hydrant Network | 7d | 2026-01-29 A | 2026-02-04 A | ENG-SH-PW-FH-S-100 | 100% |
|  | IR | **Irrigation Network** |  | 2026-01-22 | 2026-02-04 |  |  |
|  | 1 | **Main Line Sections** |  | 2026-01-22 | 2026-02-04 |  |  |
| ENG-SH-IR-ML-S-100 |  | Submission Shop Drawings for Main Line and Valves & Bulbblers and Sprinklers of Irrigation Network | 7d | 2026-01-22 A | 2026-01-28 A | MS-CS-PS SS, MS-MM-100, MS-MM-130, MS-MM-140, MS-MM-150, MS-MM-160, MS-CS-IR SS, ENG-SH-RD-S-100, ENG-SH-RD-S-110, MS-CS-IR FF | 100% |
| ENG-SH-IR-ML-A-110 |  | Approval Shop Drawings for Main Line and Valves & Bulbblers and Sprinklers of Irrigation Network | 7d | 2026-01-29 A | 2026-02-04 A | ENG-SH-IR-ML-S-100 | 100% |
|  | MV | **Medium Voltage Network** |  | 2026-01-22 | 2026-02-04 |  |  |
| ENG-SH-MV-S-100 |  | Submission Shop Drawings for Medium Voltage Network | 7d | 2026-01-22 A | 2026-01-28 A | MS-CS-PS SS, MS-MM-100, MS-MM-130, MS-MM-140, MS-MM-150, MS-MM-160, MS-CS-MV SS, ENG-SH-RD-S-100, ENG-SH-RD-S-110 | 100% |
| ENG-SH-MV-A-110 |  | Approval Shop Drawings for Medium Voltage Network | 7d | 2026-01-29 A | 2026-02-04 A | ENG-SH-MV-S-100 | 100% |
|  | LV | **Low Voltage Network** |  | 2026-01-22 | 2026-02-04 |  |  |
| ENG-SH-LV-S-110 |  | Submission Shop Drawings for Low Voltage Network | 7d | 2026-01-22 A | 2026-01-28 A | MS-CS-PS SS, MS-MM-100, MS-MM-130, MS-MM-140, MS-MM-150, MS-MM-160, MS-CS-LV SS, ENG-SH-RD-S-100, ENG-SH-RD-S-110 | 100% |
| ENG-SH-LV-A-120 |  | Approval Shop Drawings for Low Voltage Network | 7d | 2026-01-29 A | 2026-02-04 A | ENG-SH-LV-S-110 | 100% |
|  | SL | **Street Lighting Network** |  | 2026-01-22 | 2026-02-04 |  |  |
| ENG-SH-SL-S-100 |  | Submission Shop Drawings for Street Lighting Network | 7d | 2026-01-22 A | 2026-01-28 A | MS-CS-PS SS, MS-MM-100, MS-MM-130, MS-MM-140, MS-MM-150, MS-MM-160, MS-CS-SL SS, ENG-SH-RD-S-100, ENG-SH-RD-S-110 | 100% |
| ENG-SH-SL-A-110 |  | Approval Shop Drawings for Street Lighting Network | 7d | 2026-01-29 A | 2026-02-04 A | ENG-SH-SL-S-100 | 100% |
|  | TL | **Telecom Network** |  | 2026-01-22 | 2026-02-04 |  |  |
| ENG-SH-CTV-S-100 |  | Submission Shop Drawings for CCTV and Telephone Complete Systems | 7d | 2026-01-22 A | 2026-01-28 A | MS-CS-PS SS, MS-MM-100, MS-MM-130, MS-MM-140, MS-MM-150, MS-MM-160, MS-CS-TE SS, ENG-SH-RD-S-100, ENG-SH-RD-S-110 | 100% |
| ENG-SH-MSN-A-120 |  | Approval Shop Drawings for MSN and Access Control Systems | 7d | 2026-01-22 A | 2026-01-28 A | ENG-SH-MSN-S-110 FF, ENG-SH-MSN-S-110 SS | 100% |
| ENG-SH-MSN-S-110 |  | Submission Shop Drawings for MSN and Access Control Systems | 7d | 2026-01-22 A | 2026-01-28 A | MS-CS-PS SS, MS-MM-100, MS-MM-130, MS-MM-140, MS-MM-150, MS-MM-160, MS-CS-TE SS, ENG-SH-RD-S-100, ENG-SH-RD-S-110 | 100% |
| ENG-SH-TE-S-100 |  | Submission Shop Drawings for Telecom Network | 7d | 2026-01-22 A | 2026-01-28 A | MS-CS-PS SS, MS-MM-100, MS-MM-130, MS-MM-140, MS-MM-150, MS-MM-160, MS-CS-TE SS, ENG-SH-RD-S-100, ENG-SH-RD-S-110 | 100% |
| ENG-SH-CTV-A-110 |  | Approval Shop Drawings for CCTV and Telephone Complete Systems | 7d | 2026-01-29 A | 2026-02-04 A | ENG-SH-CTV-S-100 | 100% |
| ENG-SH-TE-A-110 |  | Approval Shop Drawings for Telecom Network | 7d | 2026-01-29 A | 2026-02-04 A | ENG-SH-TE-S-100 | 100% |
|  | 1 | **Superstructure Works** |  | 2026-01-22 | 2026-02-04 |  |  |
|  | LS | **Water Pump Station** |  | 2026-01-22 | 2026-02-04 |  |  |
| ENG-SH-LS-S-160 |  | Submission Shop Drawings Package for Water Pump Station | 7d | 2026-01-22 A | 2026-01-28 A | MS-CS-PS SS, MS-MM-100, MS-MM-130, MS-MM-140, MS-MM-150, MS-MM-160, MS-CS-MV10 SS, ENG-SH-RD-S-100, ENG-SH-RD-S-110 | 100% |
| ENG-SH-LS-A-170 |  | Approval Shop Drawings Package for Water Pump Station | 7d | 2026-01-29 A | 2026-02-04 A | ENG-SH-LS-S-160 | 100% |
|  | ST | **Storage Tank (TSE)** |  | 2026-01-22 | 2026-02-04 |  |  |
| ENG-SH-ST-S-170 |  | Submission Shop Drawings Package for Storage Tank TSE | 7d | 2026-01-22 A | 2026-01-28 A | MS-CS-PS SS, MS-MM-100, MS-MM-130, MS-MM-140, MS-MM-150, MS-MM-160, MS-CS-TE10 SS, ENG-SH-RD-S-100, ENG-SH-RD-S-110 | 100% |
| ENG-SH-ST-A-180 |  | Approval Shop Drawings Package for Storage Tank TSE | 7d | 2026-01-29 A | 2026-02-04 A | ENG-SH-ST-S-170 | 100% |
|  | CR | **Control Room** |  | 2026-01-22 | 2026-02-04 |  |  |
| ENG-SH-ST-S-180 |  | Submission Shop Drawings Package for Control Room | 7d | 2026-01-22 A | 2026-01-28 A | MS-CS-PS SS, MS-MM-100, MS-MM-130, MS-MM-140, MS-MM-150, MS-MM-160, MS-CS-TE10 SS, MS-CS-TE20 SS, ENG-SH-RD-S-100, ENG-SH-RD-S-110, MS-CS-TE20 FF | 100% |

| ID | WBS | Task | Duration | Start | Finish | Predecessors | Complete |
| --- | --- | --- | --- | --- | --- | --- | --- |
| ENG-SH-ST-A-190 |  | Approval Shop Drawings Package for Control Room | 7d | 2026-01-29 A | 2026-02-04 A | ENG-SH-ST-S-180 | 100% |
|  | PS | **Sewage Pump Stations** |  | 2026-01-22 | 2026-02-04 |  |  |
| ENG-SH-SPS-S-150 |  | Submission Shop Drawings Package for Sewage Pump Station | 7d | 2026-01-22 A | 2026-01-28 A | MS-CS-PS SS, MS-MM-100, MS-MM-130, MS-MM-140, MS-MM-150, MS-MM-160, MS-CS-IR10 SS, ENG-SH-RD-S-100, ENG-SH-RD-S-110, MS-CS-IR10 FF | 100% |
| ENG-SH-SPS-A-160 |  | Approval Shop Drawings Package for Sewage Pump Station | 7d | 2026-01-29 A | 2026-02-04 A | ENG-SH-SPS-S-150 | 100% |
|  | GR | **Gaurd Room** |  | 2026-01-22 | 2026-02-04 |  |  |
| ENG-SH-GR-S-180 |  | Submission Shop Drawings Package for Gaurd Room | 7d | 2026-01-22 A | 2026-01-28 A | MS-CS-PS SS, MS-MM-100, MS-MM-130, MS-MM-140, MS-MM-150, MS-MM-160, MS-CS-TSE10 SS, ENG-SH-RD-S-100, ENG-SH-RD-S-110 | 100% |
| ENG-SH-GR-A-190 |  | Approval Shop Drawings Package for Gaurd Room | 7d | 2026-01-29 A | 2026-02-04 A | ENG-SH-GR-S-180 | 100% |
|  | FE | **Boundary Fence** |  | 2026-01-22 | 2026-02-04 |  |  |
| ENG-SH-GR-S-190 |  | Submission Shop Drawings Package for Boundary Fence | 7d | 2026-01-22 A | 2026-01-28 A | MS-CS-PS SS, MS-MM-100, MS-MM-130, MS-MM-140, MS-MM-150, MS-MM-160, MS-CS-LV10 SS, ENG-SH-RD-S-100, ENG-SH-RD-S-110 | 100% |
| ENG-SH-GR-A-200 |  | Approval Shop Drawings Package for Boundary Fence | 7d | 2026-01-29 A | 2026-02-04 A | ENG-SH-GR-S-190 | 100% |
|  | SD1 | **Method Statements** |  | 2026-01-18 | 2026-01-31 |  |  |
|  | INF | **Infrastructure Networks** |  | 2026-01-18 | 2026-01-31 |  |  |
|  | 9 | **Storm Drainage Network** |  | 2026-01-25 | 2026-01-31 |  |  |
|  | 1 | **Main Line Sections** |  | 2026-01-25 | 2026-01-28 |  |  |
| ENG-MS-SD-ML-S-100 |  | Submission Method Statement for Main Line of Storm Drainage Network | 2d | 2026-01-25 A | 2026-01-25 A | ENG-MS-RD-A-10 | 100% |
| ENG-MS-SD-ML-A-110 |  | Approval Method Statement for Main Line of Storm Drainage Network | 4d | 2026-01-26 A | 2026-01-28 A | ENG-MS-SD-ML-S-100 | 100% |
|  | 2 | **Catch Basin Sections** |  | 2026-01-25 | 2026-01-31 |  |  |
| ENG-MS-SD-CB-S-100 |  | Submission Method Statement for Catch Basin of Storm Drainage Network | 4d | 2026-01-25 A | 2026-01-27 A | ENG-MS-RD-A-10 | 100% |
| ENG-MS-SD-CB-A-110 |  | Approval Method Statement for Catch Basin of Storm Drainage Network | 4d | 2026-01-28 A | 2026-01-31 A | ENG-MS-SD-CB-S-100 | 100% |
|  | PO | **Storm Drainage Ponds** |  | 2026-01-25 | 2026-01-31 |  |  |
| ENG-MS-DPO-S-120 |  | Submission Method Statement Package for Storm Drainage Ponds | 4d | 2026-01-25 A | 2026-01-27 A | ENG-MS-RD-A-10 | 100% |
| ENG-MS-DPO-A-130 |  | Approval Method Statement Package for Storm Drainage Ponds | 4d | 2026-01-28 A | 2026-01-31 A | ENG-MS-DPO-S-120 | 100% |
|  | 2 | **Sewage Network** |  | 2026-01-25 | 2026-01-31 |  |  |
|  | 1 | **Main Line Sections** |  | 2026-01-25 | 2026-01-31 |  |  |
| ENG-MS-SW-ML-S-100 |  | Submission Method Statement for Main Line of Sewage Network | 4d | 2026-01-25 A | 2026-01-27 A | ENG-MS-RD-A-10 | 100% |
| ENG-MS-SW-ML-A-110 |  | Approval Method Statement for Main Line of Sewage Network | 4d | 2026-01-28 A | 2026-01-31 A | ENG-MS-SW-ML-S-100 | 100% |
|  | TSE | **Treated Sewage Effluent Network** |  | 2026-01-25 | 2026-01-31 |  |  |
| ENG-MS-TSE-ML-S-110 |  | Submission Method Statement for Main Line of Treated Sewage Effluent Network | 4d | 2026-01-25 A | 2026-01-27 A | ENG-MS-RD-A-10 | 100% |
| ENG-MS-TSE-ML-A-120 |  | Approval Method Statement for Main Line of Treated Sewage Effluent Network | 4d | 2026-01-28 A | 2026-01-31 A | ENG-MS-TSE-ML-S-110 | 100% |
|  | 3 | **Potable Water Network** |  | 2026-01-25 | 2026-01-31 |  |  |
|  | 1 | **Main Line Sections** |  | 2026-01-25 | 2026-01-31 |  |  |
| ENG-MS-PW-ML-S-100 |  | Submission Method Statement for Main Line of Potable Water Network | 4d | 2026-01-25 A | 2026-01-27 A | ENG-MS-RD-A-10 | 100% |
| ENG-MS-PW-ML-A-110 |  | Approval Method Statement for Main Line of Potable Water Network | 4d | 2026-01-28 A | 2026-01-31 A | ENG-MS-PW-ML-S-100 | 100% |
|  | 4 | **Irrigation Network** |  | 2026-01-25 | 2026-01-31 |  |  |
|  | 1 | **Main Line Sections** |  | 2026-01-25 | 2026-01-31 |  |  |
| ENG-MS-IR-ML-S-100 |  | Submission Method Statement for Main Line of Irrigation Network | 4d | 2026-01-25 A | 2026-01-27 A | ENG-MS-RD-A-10 | 100% |
| ENG-MS-IR-ML-A-110 |  | Approval Method Statement for Main Line of Irrigation Network | 4d | 2026-01-28 A | 2026-01-31 A | ENG-MS-IR-ML-S-100 | 100% |
|  | 5 | **Medium Voltage Network** |  | 2026-01-25 | 2026-01-31 |  |  |
| ENG-MS-MV-S-100 |  | Submission Method Statement for Medium Voltage Network | 4d | 2026-01-25 A | 2026-01-27 A | ENG-MS-RD-A-10 | 100% |
| ENG-MS-MV-A-110 |  | Approval Method Statement for Medium Voltage Network | 4d | 2026-01-28 A | 2026-01-31 A | ENG-MS-MV-S-100 | 100% |
|  | 1 | **Low Voltage Network** |  | 2026-01-25 | 2026-01-31 |  |  |
| ENG-MS-MV-S-110 |  | Submission Method Statement for Low Voltage Network | 4d | 2026-01-25 A | 2026-01-27 A | ENG-MS-RD-A-10 | 100% |
| ENG-MS-MV-A-120 |  | Approval Method Statement for Low Voltage Network | 4d | 2026-01-28 A | 2026-01-31 A | ENG-MS-MV-S-110 | 100% |
|  | 7 | **Street Lighting Network** |  | 2026-01-25 | 2026-01-31 |  |  |
| ENG-MS-SL-S-100 |  | Submission Method Statement for Street Lighting Network | 4d | 2026-01-25 A | 2026-01-27 A | ENG-MS-RD-A-10 | 100% |
| ENG-MS-SL-A-110 |  | Approval Method Statement for Street Lighting Network | 4d | 2026-01-28 A | 2026-01-31 A | ENG-MS-SL-S-100 | 100% |
|  | 8 | **Telecom Network** |  | 2026-01-25 | 2026-01-31 |  |  |
| ENG-MS-CTV-S-100 |  | Submission Method Statement for CCTV, Telephone, MSN, and Access Control Systems | 4d | 2026-01-25 A | 2026-01-27 A | ENG-MS-RD-A-10 | 100% |
| ENG-MS-TE-S-100 |  | Submission Method Statement for Telecom Network | 4d | 2026-01-25 A | 2026-01-27 A | ENG-MS-RD-A-10 | 100% |
| ENG-MS-CTV-A-110 |  | Approval Method Statement for CCTV, Telephone, MSN, and Access Control Systems | 4d | 2026-01-28 A | 2026-01-31 A | ENG-MS-CTV-S-100 | 100% |
| ENG-MS-TE-A-110 |  | Approval Method Statement for Telecom Network | 4d | 2026-01-28 A | 2026-01-31 A | ENG-MS-TE-S-100 | 100% |
|  | 10 | **Road Works** |  | 2026-01-18 | 2026-01-28 |  |  |
|  | 1 | **General Road Works** |  | 2026-01-18 | 2026-01-28 |  |  |
| ENG-MS-RD-S-10 |  | Submission Method Statement for Plan and Profile of Road Works | 4d | 2026-01-18 A | 2026-01-20 A | ENG-SH-RD-A-100 | 100% |
| ENG-MS-RD-S-30 |  | Submission Method Statement of Extraover for Pedestrian ramps | 4d | 2026-01-18 A | 2026-01-20 A | ENG-SH-RD-A-100 | 100% |
| ENG-MS-RD-S-40 |  | Submission Method Statement for Intersections of Road Works | 4d | 2026-01-18 A | 2026-01-20 A | ENG-SH-RD-A-100 | 100% |
| ENG-MS-RD-A-10 |  | Approval Method Statement for Plan and Profile of Road Works | 4d | 2026-01-21 A | 2026-01-24 A | ENG-MS-RD-S-10 | 100% |
| ENG-MS-RD-A-30 |  | Approval Method Statement of Extraover for Pedestrian ramps | 4d | 2026-01-21 A | 2026-01-24 A | ENG-MS-RD-S-30 | 100% |
| ENG-MS-RD-A-40 |  | Approval Method Statement for Intersections of Road Works | 4d | 2026-01-21 A | 2026-01-24 A | ENG-MS-RD-S-40 | 100% |
| ENG-MS-RD-S-20 |  | Submission Method Statement for Roads Typical Sections and Pavement Details | 4d | 2026-01-22 A | 2026-01-25 A | ENG-SH-RD-A-110 SS | 100% |
| ENG-MS-RD-A-20 |  | Approval Method Statement for Roads Typical Sections and Pavement Details | 4d | 2026-01-26 A | 2026-01-28 A | ENG-MS-RD-S-20 | 100% |
|  | 10 | **Landscape Works** |  | 2026-01-22 | 2026-01-28 |  |  |
| ENG-MS-HS-S-10 |  | Submission Method Statement for Landscaping Works | 4d | 2026-01-22 A | 2026-01-25 A | ENG-SH-RD-A-110 SS | 100% |
| ENG-MS-HS-A-10 |  | Approval Method Statement for Landscaping Works | 4d | 2026-01-26 A | 2026-01-28 A | ENG-MS-HS-S-10 | 100% |
|  | 11 | **Traffic Sign Boards and Road Marking** |  | 2026-01-22 | 2026-01-28 |  |  |
| ENG-MS-MRK-S-10 |  | Submission Method Statement for Roads Markings | 4d | 2026-01-22 A | 2026-01-25 A | ENG-SH-RD-A-110 SS | 100% |
| ENG-MS-TSB-S-10 |  | Submission Method Statement for Traffic Signs Boards | 4d | 2026-01-22 A | 2026-01-25 A | ENG-SH-RD-A-110 SS | 100% |
| ENG-MS-MRK-A-10 |  | Approval Method Statement for Roads Markings | 4d | 2026-01-26 A | 2026-01-28 A | ENG-MS-MRK-S-10 | 100% |
| ENG-MS-TSB-A-10 |  | Approval Method Statement for Traffic Signs Boards | 4d | 2026-01-26 A | 2026-01-28 A | ENG-MS-TSB-S-10 | 100% |
|  | 1 | **Superstructure Works** |  | 2026-01-25 | 2026-01-31 |  |  |

| ID | WBS | Task | Duration | Start | Finish | Predecessors | Complete |
| --- | --- | --- | --- | --- | --- | --- | --- |
|  | LS | **Water Pump Station** |  | 2026-01-25 | 2026-01-31 |  |  |
| ENG-MS-LS-S-170 |  | Submission Method Statement Package for Water Pump Station | 4d | 2026-01-25 A | 2026-01-27 A | ENG-MS-RD-A-10 | 100% |
| ENG-MS-LS-A-180 |  | Approval Method Statement Package for Water Pump Station | 4d | 2026-01-28 A | 2026-01-31 A | ENG-MS-LS-S-170 | 100% |
|  | ST | **Storage Tank (TSE)** |  | 2026-01-25 | 2026-01-31 |  |  |
| ENG-MS-ST-S-180 |  | Submission Method Statement Package for Storage Tank TSE | 4d | 2026-01-25 A | 2026-01-27 A | ENG-MS-RD-A-10 | 100% |
| ENG-MS-ST-A-190 |  | Approval Method Statement Package for Storage Tank TSE | 4d | 2026-01-28 A | 2026-01-31 A | ENG-MS-ST-S-180 | 100% |
|  | ST1 | **Control Room** |  | 2026-01-25 | 2026-01-31 |  |  |
| ENG-MS-ST-S-190 |  | Submission Method Statement Package for Control Room | 4d | 2026-01-25 A | 2026-01-27 A | ENG-MS-RD-A-10 | 100% |
| ENG-MS-ST-A-200 |  | Approval Method Statement Package for Control Room | 4d | 2026-01-28 A | 2026-01-31 A | ENG-MS-ST-S-190 | 100% |
|  | PS | **Sewage Pump Stations** |  | 2026-01-25 | 2026-01-31 |  |  |
| ENG-MS-SPS-S-160 |  | Submission Method Statement Package for Sewage Pump Station | 4d | 2026-01-25 A | 2026-01-27 A | ENG-MS-RD-A-10 | 100% |
| ENG-MS-SPS-A-170 |  | Approval Method Statement Package for Sewage Pump Station | 4d | 2026-01-28 A | 2026-01-31 A | ENG-MS-SPS-S-160 | 100% |
|  | GR | **Gaurd Room** |  | 2026-01-25 | 2026-01-31 |  |  |
| ENG-MS-GR-S-200 |  | Submission Method Statement Package for Gaurd Room | 4d | 2026-01-25 A | 2026-01-27 A | ENG-MS-RD-A-10 | 100% |
| ENG-MS-GR-A-210 |  | Approval Method Statement Package for Gaurd Room | 4d | 2026-01-28 A | 2026-01-31 A | ENG-MS-GR-S-200 | 100% |
|  | FE | **Boundary Fence** |  | 2026-01-25 | 2026-01-31 |  |  |
| ENG-MS-GR-S-210 |  | Submission Method Statement Package for Boundary Fence | 4d | 2026-01-25 A | 2026-01-27 A | ENG-MS-RD-A-10 | 100% |
| ENG-MS-GR-A-220 |  | Approval Method Statement Package for Boundary Fence | 4d | 2026-01-28 A | 2026-01-31 A | ENG-MS-GR-S-210 | 100% |
|  | SD11 | **Material Submittals and Approvals** |  | 2026-01-06 | 2026-07-20 |  |  |
|  | 2 | **Short Lead Time Items** |  | 2026-01-06 | 2026-06-13 |  |  |
|  | INF | **Infrastructure Networks** |  | 2026-01-06 | 2026-01-31 |  |  |
|  | 9 | **Storm Drainage Network** |  | 2026-01-06 | 2026-01-19 |  |  |
|  | MS | **Submission of Material** |  | 2026-01-06 | 2026-01-12 |  |  |
|  | 1 | **Main Line Sections** |  | 2026-01-06 | 2026-01-12 |  |  |
| ENG-MT-SD-ML-S-100 |  | Material Submittal for Manholes of Storm Drainage Network | 7d | 2026-01-06 A | 2026-01-12 A | MS-CS-SD SS | 100% |
| ENG-MT-SD-ML-S-110 |  | Material Submittal for Main Line Pipes of Storm Drainage Network | 7d | 2026-01-06 A | 2026-01-12 A | MS-CS-SD SS | 100% |
|  | 2 | **Catch Basin Sections** |  | 2026-01-06 | 2026-01-12 |  |  |
| ENG-MT-SD-CB-S-100 |  | Material Submittal for Catch Basins of Storm Drainage Network | 7d | 2026-01-06 A | 2026-01-12 A | MS-CS-SD SS | 100% |
| ENG-MT-SD-CB-S-110 |  | Material Submittal for Catch Basin Pipes of Storm Drainage Network | 7d | 2026-01-06 A | 2026-01-12 A | MS-CS-SD SS | 100% |
|  | 4 | **Storm Drainage Pond** |  | 2026-01-06 | 2026-01-12 |  |  |
| ENG-MT-DPO-CV-S-100 |  | Material Submittal for Materials of Storm Drainage Ponds | 7d | 2026-01-06 A | 2026-01-12 A | MS-CS-SL10 SS | 100% |
|  | 3 | **Testing and Finishes** |  | 2026-01-06 | 2026-01-12 |  |  |
| ENG-MT-SD-TF-S-100 |  | Material Submittal for Manhole Covers of Storm Drainage Network | 7d | 2026-01-06 A | 2026-01-12 A | MS-CS-SD SS | 100% |
| ENG-MT-SD-TF-S-110 |  | Material Submittal for Catch Basin Covers of Storm Drainage Network | 7d | 2026-01-06 A | 2026-01-12 A | MS-CS-SD SS | 100% |
|  | MA | **Approval of Material** |  | 2026-01-13 | 2026-01-19 |  |  |
|  | 1 | **Main Line Sections** |  | 2026-01-13 | 2026-01-19 |  |  |
| ENG-MT-SD-ML-A-100 |  | Material Approval for Manholes of Storm Drainage Network | 6d | 2026-01-13 A | 2026-01-19 A | ENG-MT-SD-ML-S-100 | 100% |
| ENG-MT-SD-ML-A-110 |  | Material Approval for Main Line Pipes of Storm Drainage Network | 6d | 2026-01-13 A | 2026-01-19 A | ENG-MT-SD-ML-S-110 | 100% |
|  | 2 | **Catch Basin Sections** |  | 2026-01-13 | 2026-01-19 |  |  |
| ENG-MT-SD-CB-A-100 |  | Material Approval for Catch Basins of Storm Drainage Network | 6d | 2026-01-13 A | 2026-01-19 A | ENG-MT-SD-CB-S-100 | 100% |
| ENG-MT-SD-CB-A-110 |  | Material Approval for Catch Basin Pipes of Storm Drainage Network | 6d | 2026-01-13 A | 2026-01-19 A | ENG-MT-SD-CB-S-110 | 100% |
|  | 4 | **Storm Drainage Pond** |  | 2026-01-13 | 2026-01-19 |  |  |
| ENG-MT-DPO-CV-A-110 |  | Material Approval for Materials of Storm Drainage Ponds | 6d | 2026-01-13 A | 2026-01-19 A | ENG-MT-DPO-CV-S-100 | 100% |
|  | 3 | **Testing and Finishes** |  | 2026-01-13 | 2026-01-19 |  |  |
| ENG-MT-SD-TF-A-100 |  | Material Approval for Manhole Covers of Storm Drainage Network | 6d | 2026-01-13 A | 2026-01-19 A | ENG-MT-SD-TF-S-100 | 100% |
| ENG-MT-SD-TF-A-110 |  | Material Approval for Catch Basin Covers of Storm Drainage Network | 6d | 2026-01-13 A | 2026-01-19 A | ENG-MT-SD-TF-S-110 | 100% |
|  | 2 | **Sewage Network** |  | 2026-01-06 | 2026-01-19 |  |  |
|  | MS | **Submission of Material** |  | 2026-01-06 | 2026-01-12 |  |  |
|  | 1 | **Main Line Sections** |  | 2026-01-06 | 2026-01-12 |  |  |
| ENG-MT-SW-ML-S-100 |  | Material Submittal for Manholes of Sewage Network | 7d | 2026-01-06 A | 2026-01-12 A | MS-CS-SW SS | 100% |
| ENG-MT-SW-ML-S-110 |  | Material Submittal for Main Line Pipes of Sewage Network | 7d | 2026-01-06 A | 2026-01-12 A | MS-CS-SW SS | 100% |
|  | 3 | **Testing and Finishes** |  | 2026-01-06 | 2026-01-12 |  |  |
| ENG-MT-SW-TF-S-100 |  | Material Submittal for Manhole Covers of Sewage Network | 7d | 2026-01-06 A | 2026-01-12 A | MS-CS-SW SS | 100% |
|  | MA | **Approval of Material** |  | 2026-01-13 | 2026-01-19 |  |  |
|  | 1 | **Main Line Sections** |  | 2026-01-13 | 2026-01-19 |  |  |
| ENG-MT-SW-ML-A-100 |  | Material Approval for Manholes of Sewage Network | 6d | 2026-01-13 A | 2026-01-19 A | ENG-MT-SW-ML-S-100 | 100% |
| ENG-MT-SW-ML-A-110 |  | Material Approval for Main Line Pipes of Sewage Network | 7d | 2026-01-13 A | 2026-01-19 A | ENG-MT-SW-ML-S-110 | 100% |
|  | 3 | **Testing and Finishes** |  | 2026-01-13 | 2026-01-19 |  |  |
| ENG-MT-SW-TF-A-100 |  | Material Approval for Manhole Covers of Sewage Network | 6d | 2026-01-13 A | 2026-01-19 A | ENG-MT-SW-TF-S-100 | 100% |
|  | 1 | **Treated Sewage Effluent (Tse)** |  | 2026-01-06 | 2026-01-19 |  |  |
|  | MS | **Submission of Material** |  | 2026-01-06 | 2026-01-12 |  |  |
| ENG-MT-IR-ML-S-120 |  | Material Submittal for Materials of Treated Sewage Effluent (TSE) | 7d | 2026-01-06 A | 2026-01-12 A | MS-CS-TSE SS | 100% |
|  | MA | **Approval of Material** |  | 2026-01-13 | 2026-01-19 |  |  |
| ENG-MT-IR-ML-A-120 |  | Material Approval for Materials of Treated Sewage Effluent (TSE) | 6d | 2026-01-13 A | 2026-01-19 A | ENG-MT-IR-ML-S-120 | 100% |
|  | 3 | **Potable Water Network** |  | 2026-01-06 | 2026-01-19 |  |  |
|  | MS | **Submission of Material** |  | 2026-01-06 | 2026-01-12 |  |  |
|  | 1 | **Main Line Sections** |  | 2026-01-06 | 2026-01-12 |  |  |
| ENG-MT-PW-ML-S-100 |  | Material Submittal for Main Line Pipes and Materials of Potable Water Network | 7d | 2026-01-06 A | 2026-01-12 A | MS-CS-PW SS | 100% |
| ENG-MT-PW-ML-S-110 |  | Material Submittal for Main Line Valves of Potable Water Network | 7d | 2026-01-06 A | 2026-01-12 A | MS-CS-PW SS | 100% |
|  | 3 | **Fire Hydrant** |  | 2026-01-06 | 2026-01-12 |  |  |

| ID | WBS | Task | Duration | Start | Finish | Predecessors | Complete |
| --- | --- | --- | --- | --- | --- | --- | --- |
| ENG-MT-PW-FH-S-100 |  | Material Submittal for Fire Hydrant of Potable Water Network | 7d | 2026-01-06 A | 2026-01-12 A | MS-CS-PW SS | 100% |
|  | 4 | **Testing and Finishes** |  | 2026-01-06 | 2026-01-12 |  |  |
| ENG-MT-PW-TF-S-100 |  | Material Submittal for Surface Box of Potable Water Network | 7d | 2026-01-06 A | 2026-01-12 A | MS-CS-PW SS | 100% |
|  | MA | **Approval of Material** |  | 2026-01-13 | 2026-01-19 |  |  |
|  | 1 | **Main Line Sections** |  | 2026-01-13 | 2026-01-19 |  |  |
| ENG-MT-PW-ML-A-100 |  | Material Approval for Main Line Pipes and Materials of Potable Water Network | 6d | 2026-01-13 A | 2026-01-19 A | ENG-MT-PW-ML-S-100 | 100% |
| ENG-MT-PW-ML-A-110 |  | Material Approval for Valves of Potable Water Network | 6d | 2026-01-13 A | 2026-01-19 A | ENG-MT-PW-ML-S-110 | 100% |
|  | 3 | **Fire Hydrant** |  | 2026-01-13 | 2026-01-19 |  |  |
| ENG-MT-PW-FH-A-100 |  | Material Approval for Fire Hydrants of Potable Water Network | 6d | 2026-01-13 A | 2026-01-19 A | ENG-MT-PW-FH-S-100 | 100% |
|  | 4 | **Testing and Finishes** |  | 2026-01-13 | 2026-01-19 |  |  |
| ENG-MT-PW-TF-A-100 |  | Material Approval for Surface Box of Potable Water Network | 6d | 2026-01-13 A | 2026-01-19 A | ENG-MT-PW-TF-S-100 | 100% |
|  | 4 | **Irrigation Network** |  | 2026-01-06 | 2026-01-19 |  |  |
|  | MS | **Submission of Material** |  | 2026-01-06 | 2026-01-12 |  |  |
|  | 1 | **Main Line Pipes** |  | 2026-01-06 | 2026-01-12 |  |  |
| ENG-MT-IR-ML-S-100 |  | Material Submittal for Main Line Pipes of Irrigation Network | 7d | 2026-01-06 A | 2026-01-12 A | MS-CS-IR SS | 100% |
| ENG-MT-IR-ML-S-110 |  | Material Submittal for Main Line Valves of Irrigation Network | 7d | 2026-01-06 A | 2026-01-12 A | MS-CS-IR SS | 100% |
|  | MA | **Approval of Material** |  | 2026-01-13 | 2026-01-19 |  |  |
|  | 1 | **Main Line Pipes** |  | 2026-01-13 | 2026-01-19 |  |  |
| ENG-MT-IR-ML-A-100 |  | Material Approval for Main Line Pipes of Irrigation Network | 6d | 2026-01-13 A | 2026-01-19 A | ENG-MT-IR-ML-S-100 | 100% |
| ENG-MT-IR-ML-A-110 |  | Material Approval for Valves of Irrigation Network | 6d | 2026-01-13 A | 2026-01-19 A | ENG-MT-IR-ML-S-110 | 100% |
|  | 5 | **Medium Voltage Network** |  | 2026-01-06 | 2026-01-19 |  |  |
|  | MS | **Submission of Material** |  | 2026-01-06 | 2026-01-12 |  |  |
| ENG-MT-MV-ML-S-100 |  | Material Submittal for Medium Voltage Materials of Medium Voltage Network | 7d | 2026-01-06 A | 2026-01-12 A | MS-CS-MV SS, MS-CS-MV FF | 100% |
|  | MA | **Approval of Material** |  | 2026-01-13 | 2026-01-19 |  |  |
| ENG-MT-MV-ML-A-100 |  | Material Approval for Medium Voltage Materials of Medium Voltage Network | 6d | 2026-01-13 A | 2026-01-19 A | ENG-MT-MV-ML-S-100 | 100% |
|  | 11 | **Low Voltage Network** |  | 2026-01-06 | 2026-01-19 |  |  |
|  | MS | **Submission of Material** |  | 2026-01-06 | 2026-01-12 |  |  |
|  | 1 | **Main Low Voltage Cables Works** |  | 2026-01-06 | 2026-01-12 |  |  |
| PRO-LV-ML-S-100 |  | Material Submittal for Main Low Voltage Cables of Low Voltage Network | 7d | 2026-01-06 A | 2026-01-12 A | MS-CS-LV SS | 100% |
|  | 2 | **Service Low Voltage Cables Works** |  | 2026-01-06 | 2026-01-12 |  |  |
| PRO-LV-HC-S-100 |  | Material Submittal for Service Low Voltage Cables of Low Voltage Network | 7d | 2026-01-06 A | 2026-01-12 A | MS-CS-LV SS | 100% |
|  | 3 | **Distribution Pillars Works** |  | 2026-01-06 | 2026-01-12 |  |  |
| PRO-LV-DP-S-100 |  | Material Submittal for Distribution Pillars of Low Voltage Network | 7d | 2026-01-06 A | 2026-01-12 A | MS-CS-LV SS | 100% |
| PRO-LV-DP-S-110 |  | Material Submittal for Low Voltage Earthing of Low Voltage Network | 7d | 2026-01-06 A | 2026-01-12 A | MS-CS-LV SS | 100% |
|  | 4 | **Termination and Testing Works** |  | 2026-01-06 | 2026-01-12 |  |  |
| PRO-LV-TT-S-100 |  | Material Submittal for Cable Lugs of Low Voltage Network | 7d | 2026-01-06 A | 2026-01-12 A | MS-CS-LV SS | 100% |
|  | MA | **Approval of Material** |  | 2026-01-13 | 2026-01-19 |  |  |
|  | 1 | **Main Low Voltage Cables Works** |  | 2026-01-13 | 2026-01-19 |  |  |
| PRO-LV-ML-A-100 |  | Material Approval for Main Low Voltage Cables of Low Voltage Network | 6d | 2026-01-13 A | 2026-01-19 A | PRO-LV-ML-S-100 | 100% |
|  | 2 | **Service Low Voltage Cables Works** |  | 2026-01-13 | 2026-01-19 |  |  |
| PRO-LV-HC-A-100 |  | Material Approval for Service Low Voltage Cables of Low Voltage Network | 6d | 2026-01-13 A | 2026-01-19 A | PRO-LV-HC-S-100 | 100% |
|  | 3 | **Distribution Pillars Works** |  | 2026-01-13 | 2026-01-19 |  |  |
| PRO-LV-DP-A-100 |  | Material Approval for Distribution Pillars of Low Voltage Network | 6d | 2026-01-13 A | 2026-01-19 A | PRO-LV-DP-S-100 | 100% |
| PRO-LV-DP-A-110 |  | Material Approval for Low Voltage Earthing of Low Voltage Network | 6d | 2026-01-13 A | 2026-01-19 A | PRO-LV-DP-S-110 | 100% |
|  | 4 | **Termination and Testing Works** |  | 2026-01-13 | 2026-01-19 |  |  |
| PRO-LV-TT-A-100 |  | Material Approval for Cable Lugs of Low Voltage Network | 7d | 2026-01-13 A | 2026-01-19 A | PRO-LV-TT-S-100 | 100% |
|  | 7 | **Street Lighting Network** |  | 2026-01-06 | 2026-01-19 |  |  |
|  | MS | **Submission of Material** |  | 2026-01-06 | 2026-01-12 |  |  |
|  | 1 | **Cabling Works** |  | 2026-01-06 | 2026-01-12 |  |  |
| ENG-MT-SL-ML-S-100 |  | Material Submittal for Lighting Cables of Street Lighting Network | 7d | 2026-01-06 A | 2026-01-12 A | MS-CS-SL SS, MS-CS-SL FF | 100% |
|  | 2 | **Lighting Poles Works** |  | 2026-01-06 | 2026-01-12 |  |  |
| ENG-MT-SL-S-100 |  | Material Submittal for Lighting Poles Concrete Foundations of Street Lighting Network | 7d | 2026-01-06 A | 2026-01-12 A | MS-CS-SL SS | 100% |
| ENG-MT-SL-S-110 |  | Material Submittal for Lighting Poles of Street Lighting Network | 7d | 2026-01-06 A | 2026-01-12 A | MS-CS-SL SS | 100% |
| ENG-MT-SL-S-120 |  | Material Submittal for Lighting Fixtures of Street Lighting Network | 7d | 2026-01-06 A | 2026-01-12 A | MS-CS-SL SS | 100% |
|  | 3 | **Distribution Panel Board** |  | 2026-01-06 | 2026-01-12 |  |  |
| ENG-MT-SL-DB-S-100 |  | Material Submittal for Lighting Distrubution Panel Boards of Street Lighting Network | 7d | 2026-01-06 A | 2026-01-12 A | MS-CS-SL SS | 100% |
|  | 5 | **Termination and Testing Works** |  | 2026-01-06 | 2026-01-12 |  |  |
| ENG-MT-SL-TF-S-100 |  | Material Submittal for Fuse Boxes of Street Lighting Network | 7d | 2026-01-06 A | 2026-01-12 A | MS-CS-SL SS | 100% |
| ENG-MT-SL-TF-S-110 |  | Material Submittal for Cable Lugs of Street Lighting Network | 7d | 2026-01-06 A | 2026-01-12 A | MS-CS-SL SS | 100% |
|  | 4 | **Earthing System Works** |  | 2026-01-06 | 2026-01-12 |  |  |
| ENG-MT-SL-ES-S-100 |  | Material Submittal for Lighting Earthing of Street Lighting Network | 7d | 2026-01-06 A | 2026-01-12 A | MS-CS-SL SS | 100% |
|  | MA | **Approval of Material** |  | 2026-01-13 | 2026-01-19 |  |  |
|  | 1 | **Cabling Works** |  | 2026-01-13 | 2026-01-19 |  |  |
| ENG-MT-SL-ML-A-100 |  | Material Approval for Lighting Cables of Street Lighting Network | 6d | 2026-01-13 A | 2026-01-19 A | ENG-MT-SL-ML-S-100 | 100% |
|  | 2 | **Lighting Poles Works** |  | 2026-01-13 | 2026-01-19 |  |  |
| ENG-MT-SL-A-100 |  | Material Approval for Lighting Poles Concrete Foundations of Street Lighting Network | 6d | 2026-01-13 A | 2026-01-19 A | ENG-MT-SL-S-100 | 100% |
| ENG-MT-SL-A-110 |  | Material Approval for Lighting Poles of Street Lighting Network | 6d | 2026-01-13 A | 2026-01-19 A | ENG-MT-SL-S-110 | 100% |
| ENG-MT-SL-A-120 |  | Material Approval for Lighting Fixtures of Street Lighting Network | 6d | 2026-01-13 A | 2026-01-19 A | ENG-MT-SL-S-120 | 100% |
|  | 3 | **Distribution Panel Board** |  | 2026-01-13 | 2026-01-19 |  |  |
| ENG-MT-SL-DB-A-100 |  | Material Approval for Distrubution Panel Boards of Street Lighting Network | 6d | 2026-01-13 A | 2026-01-19 A | ENG-MT-SL-DB-S-100 | 100% |

| ID | WBS | Task | Duration | Start | Finish | Predecessors | Complete |
| --- | --- | --- | --- | --- | --- | --- | --- |
|  | 4 | **Earthing System Works** |  | 2026-01-13 | 2026-01-19 |  |  |
| ENG-MT-SL-ES-A-100 |  | Material Approval for Lighting Earthing of Street Lighting Network | 6d | 2026-01-13 A | 2026-01-19 A | ENG-MT-SL-ES-S-100 | 100% |
|  | 5 | **Termination and Testing Works** |  | 2026-01-13 | 2026-01-19 |  |  |
| ENG-MT-SL-TF-A-100 |  | Material Approval for Fuse Boxes of Street Lighting Network | 6d | 2026-01-13 A | 2026-01-19 A | ENG-MT-SL-TF-S-100 | 100% |
| ENG-MT-SL-TF-A-110 |  | Material Approval for Cable Lugs of Street Lighting Network | 6d | 2026-01-13 A | 2026-01-19 A | ENG-MT-SL-TF-S-110 | 100% |
|  | 8 | **Telecom and Light Current Networks** |  | 2026-01-06 | 2026-01-19 |  |  |
|  | MS | **Submission of Material** |  | 2026-01-06 | 2026-01-12 |  |  |
|  | 1 | **Ducts Works** |  | 2026-01-06 | 2026-01-12 |  |  |
| ENG-MT-TE-S-100 |  | Material Submittal for Ducts of Telecom Network | 7d | 2026-01-06 A | 2026-01-12 A | MS-CS-TE SS | 100% |
|  | 3 | **Manholes Works** |  | 2026-01-06 | 2026-01-12 |  |  |
| ENG-MT-TE-S-110 |  | Material Submittal for Manholes of Telecom Network | 7d | 2026-01-06 A | 2026-01-12 A | MS-CS-TE SS | 100% |
|  | 2 | **CCTV, Telephone, MSN, ACs System Works** |  | 2026-01-06 | 2026-01-12 |  |  |
| ENG-MT-CTV-S-100 |  | Material Submittal for Materials of CCTV, Telephone, MSN, and Access Control Systems | 7d | 2026-01-06 A | 2026-01-12 A | MS-CS-TE SS | 100% |
|  | MA | **Approval of Material** |  | 2026-01-13 | 2026-01-19 |  |  |
|  | 1 | **Ducts Works** |  | 2026-01-13 | 2026-01-19 |  |  |
| ENG-MT-TE-A-100 |  | Material Approval for Ducts of Telecom Network | 6d | 2026-01-13 A | 2026-01-19 A | ENG-MT-TE-S-100 | 100% |
|  | 3 | **Manholes Works** |  | 2026-01-13 | 2026-01-19 |  |  |
| ENG-MT-TE-A-110 |  | Material Approval for Manholes of Telecom Network | 6d | 2026-01-13 A | 2026-01-19 A | ENG-MT-TE-S-110 | 100% |
|  | 2 | **CCTV, Telephone, MSN, ACs System Works** |  | 2026-01-13 | 2026-01-19 |  |  |
| ENG-MT-CTV-A-100 |  | Material Approval for for Materials of CCTV, Telephone, MSN, and Access Control Systems | 6d | 2026-01-13 A | 2026-01-19 A | ENG-MT-CTV-S-100 | 100% |
|  | 10 | **Road Works** |  | 2026-01-06 | 2026-01-31 |  |  |
|  | MS | **Submission of Material** |  | 2026-01-06 | 2026-01-24 |  |  |
|  | 1 | **General Road Works** |  | 2026-01-18 | 2026-01-24 |  |  |
| ENG-MT-RD-S-100 |  | Material Submittal for Subgrade of Road Works | 7d | 2026-01-18 A | 2026-01-24 A | ENG-SH-RD-A-100, MS-CS-RD SS | 100% |
| ENG-MT-RD-S-110 |  | Material Submittal for Aggregate Base Course of Road Works | 7d | 2026-01-18 A | 2026-01-24 A | ENG-SH-RD-A-100, MS-CS-RD SS | 100% |
| ENG-MT-RD-S-120 |  | Material Submittal for Prime Coat of Road Works | 7d | 2026-01-18 A | 2026-01-24 A | ENG-SH-RD-A-100, MS-CS-RD SS | 100% |
| ENG-MT-RD-S-130 |  | Material Submittal for Asphaltic Base Course Layer of Road Works | 7d | 2026-01-18 A | 2026-01-24 A | ENG-SH-RD-A-100, MS-CS-RD SS | 100% |
| ENG-MT-RD-S-160 |  | Material Submittal for Asphaltic Wearing Course Layer for Roads Network | 7d | 2026-01-18 A | 2026-01-24 A | ENG-SH-RD-A-100, MS-CS-RD SS | 100% |
| ENG-MT-RD-S-170 |  | Material Submittal for Tack Coat Layer for Roads Network | 7d | 2026-01-18 A | 2026-01-24 A | ENG-SH-RD-A-100, MS-CS-RD SS | 100% |
|  | 10 | **Landscape Works** |  | 2026-01-06 | 2026-01-12 |  |  |
| ENG-MT-RD-S-140 |  | Material Submittal for Interlock Tiles of Landscaping | 7d | 2026-01-06 A | 2026-01-12 A | MS-CS-RD SS | 100% |
| ENG-MT-RD-S-150 |  | Material Submittal for Curbstones of Landscaping | 7d | 2026-01-06 A | 2026-01-12 A | MS-CS-RD SS | 100% |
|  | 11 | **Traffic Signs Boards and Roads Marking** |  | 2026-01-06 | 2026-01-12 |  |  |
| ENG-MT-TS-S-100 |  | Material Submittal for Traffic Signs Boards of Road Works | 7d | 2026-01-06 A | 2026-01-12 A | MS-CS-RD SS | 100% |
| ENG-MT-TS-S-110 |  | Material Submittal for Road Markings of Road Works | 7d | 2026-01-06 A | 2026-01-12 A | MS-CS-RD SS | 100% |
|  | NA | **Approval of Material** |  | 2026-01-13 | 2026-01-31 |  |  |
|  | 1 | **General Road Works** |  | 2026-01-25 | 2026-01-31 |  |  |
| ENG-MT-RD-A-100 |  | Material Approval for Subgrade of Road Works | 6d | 2026-01-25 A | 2026-01-31 A | ENG-MT-RD-S-100 | 100% |
| ENG-MT-RD-A-110 |  | Material Approval for Aggregate Base Course of Road Works | 6d | 2026-01-25 A | 2026-01-31 A | ENG-MT-RD-S-110 | 100% |
| ENG-MT-RD-A-120 |  | Material Approval for Prime Coat of Road Works | 6d | 2026-01-25 A | 2026-01-31 A | ENG-MT-RD-S-120 | 100% |
| ENG-MT-RD-A-130 |  | Material Approval for Asphaltic Base Course Layer of Road Works | 7d | 2026-01-25 A | 2026-01-31 A | ENG-MT-RD-S-130 | 100% |
| ENG-MT-RD-A-160 |  | Material Approval for Asphaltic Wearing Course Layer for Roads Network | 7d | 2026-01-25 A | 2026-01-31 A | ENG-MT-RD-S-160 | 100% |
| ENG-MT-RD-A-170 |  | Material Approval for Tack Coat Layer for Roads Network | 6d | 2026-01-25 A | 2026-01-31 A | ENG-MT-RD-S-170 | 100% |
|  | 2 | **Landscape Works** |  | 2026-01-13 | 2026-01-19 |  |  |
| ENG-MT-RD-A-140 |  | Material Approval of Interlock Tiles for Landscaping | 6d | 2026-01-13 A | 2026-01-19 A | ENG-MT-RD-S-140 | 100% |
| ENG-MT-RD-A-150 |  | Material Approval of Curbstones for Landscaping | 6d | 2026-01-13 A | 2026-01-19 A | ENG-MT-RD-S-150 | 100% |
|  | 3 | **Traffic Signs Boards and Roads Marking** |  | 2026-01-13 | 2026-01-19 |  |  |
| ENG-MT-TS-A-100 |  | Material Approval for Traffic Signs Boards of Road Works | 6d | 2026-01-13 A | 2026-01-19 A | ENG-MT-TS-S-100 | 100% |
| ENG-MT-TS-A-110 |  | Material Approval for Road Markings of Road Works | 6d | 2026-01-13 A | 2026-01-19 A | ENG-MT-TS-S-110 | 100% |
|  | 6 | **Softscape and Planting Works** |  | 2026-01-06 | 2026-01-19 |  |  |
|  | 1 | **Submission of Material** |  | 2026-01-06 | 2026-01-12 |  |  |
| ENG-MT-IR-ML-S-140 |  | Material Submittal for Softscape and Planting Works | 7d | 2026-01-06 A | 2026-01-12 A | MS-CS-RD SS | 100% |
| ENG-MT-IR-ML-S-150 |  | Material Submittal for Site Furnishings (Seating Bench,Stone Boulders and Gravel) | 7d | 2026-01-06 A | 2026-01-12 A | MS-CS-RD SS | 100% |
|  | 2 | **Approval of Material** |  | 2026-01-13 | 2026-01-19 |  |  |
| ENG-MT-IR-ML-A-140 |  | Material Approval for Softscape and Planting Works | 6d | 2026-01-13 A | 2026-01-19 A | ENG-MT-IR-ML-S-140 | 100% |
| ENG-MT-IR-ML-A-150 |  | Material Approval for Site Furnishings (Seating Bench,Stone Boulders and Gravel) | 6d | 2026-01-13 A | 2026-01-19 A | ENG-MT-IR-ML-S-150 | 100% |
|  | 1 | **Superstructure Works** |  | 2026-01-06 | 2026-06-13 |  |  |
|  | SL | **Water Pump Station** |  | 2026-01-06 | 2026-01-19 |  |  |
|  | 1 | **Submission of Material** |  | 2026-01-06 | 2026-01-12 |  |  |
| ENG-MT-SLS-CV-S-100 |  | Material Submittal for Works for Water Pump Station | 7d | 2026-01-06 A | 2026-01-12 A | MS-CS-MV10 SS, MS-CS-MV10 FF | 100% |
|  | 2 | **Approval of Material** |  | 2026-01-13 | 2026-01-19 |  |  |
| ENG-MT-SLS-CV-A-110 |  | Material Approval for Works for Water Pump Station | 6d | 2026-01-13 A | 2026-01-19 A | ENG-MT-SLS-CV-S-100 | 100% |
|  | SL111 | **Storage Tank (TSE)** |  | 2026-01-06 | 2026-01-19 |  |  |
|  | 1 | **Submission of Material** |  | 2026-01-06 | 2026-01-12 |  |  |
| ENG-MT-TSE-CV-S-130 |  | Material Submittal for Works for Storage Tank (TSE) | 7d | 2026-01-06 A | 2026-01-12 A | MS-CS-TE10 SS, MS-CS-TE10 FF | 100% |
|  | 2 | **Approval of Material** |  | 2026-01-13 | 2026-01-19 |  |  |
| ENG-MT-TSE-CV-A-140 |  | Material Approval for Works for Storage Tank (TSE) | 6d | 2026-01-13 A | 2026-01-19 A | ENG-MT-TSE-CV-S-130 | 100% |
|  | SL1112 | **Control Room** |  | 2026-02-03 | 2026-02-10 |  |  |
|  | 1 | **Submission of Material** |  | 2026-02-03 | 2026-02-04 |  |  |
| ENG-MT-TSE-CV-S-140 |  | Material Submittal for Works for Control Room | 3d | 2026-02-03 A | 2026-02-04 A | MS-CS-TE20 SS | 100% |

| ID | WBS | Task | Duration | Start | Finish | Predecessors | Complete | Total float |
| --- | --- | --- | --- | --- | --- | --- | --- | --- |
|  | 2 | **Approval of Material** |  | 2026-02-04 | 2026-02-10 |  |  |  |
| ENG-MT-TSE-CV-A-150 |  | Material Approval for Works for Control Room | 6d | 2026-02-04 A | 2026-02-10 A | ENG-MT-TSE-CV-S-140 | 100% |  |
|  | SL1111 | **Sewage Pump Stations** |  | 2026-01-06 | 2026-02-16 |  |  |  |
|  | 1 | **Submission of Material** |  | 2026-01-06 | 2026-01-12 |  |  |  |
| ENG-MT-PS-CV-S-140 |  | Material Submittal for Works of Sewage Pump Station | 7d | 2026-01-06 A | 2026-01-12 A | MS-CS-IR10 SS | 100% |  |
|  | 2 | **Approval of Material** |  | 2026-02-11 | 2026-02-16 |  |  |  |
| ENG-MT-PS-CV-A-150 |  | Material Approval for Works of Sewage Pump Station | 5d | 2026-02-11 A | 2026-02-16 A | ENG-MT-PS-CV-S-140 | 100% |  |
|  | SL11 | **Gaurd Room** |  | 2026-02-18 | 2026-03-02 |  |  |  |
|  | 1 | **Submission of Material** |  | 2026-02-18 | 2026-02-19 |  |  |  |
| ENG-MT-GR-CV-S-120 |  | Material Submittal for Materials for Gaurd Room | 0d | 2026-02-18 A | 2026-02-19 A | MS-CS-TSE10 SS | 100% |  |
|  | 2 | **Approval of Material** |  | 2026-02-19 | 2026-03-02 |  |  |  |
| ENG-MT-GR-CV-A-130 |  | Material Approval for Materials for Gaurd Room | 7d | 2026-02-19 A | 2026-03-02 A | ENG-MT-GR-CV-S-120 | 100% |  |
|  | SL1 | **Boundary Fence** |  | 2026-02-25 | 2026-06-13 |  |  |  |
|  | 1 | **Submission of Material** |  | 2026-02-25 | 2026-02-26 |  |  |  |
| ENG-MT-FE-CV-S-110 |  | Material Submittal for Materials for Boundary Fence | 0d | 2026-02-25 A | 2026-02-26 A | MS-CS-LV10 SS | 100% |  |
|  | 2 | **Approval of Material** |  | 2026-02-28 | 2026-06-13 |  |  |  |
| ENG-MT-FE-CV-A-120 |  | Material Approval for Materials for Boundary Fence | 80d | 2026-02-28 A | 2026-06-13 A | ENG-MT-FE-CV-S-110 | 100% |  |
|  | 1 | **Long Lead Time Items** |  | 2026-06-23 | 2026-07-20 |  |  |  |
|  | 2 | **Superstructure Works** |  | 2026-06-23 | 2026-07-20 |  |  |  |
|  | SL | **Sewage Pump Stations** |  | 2026-06-23 | 2026-07-06 |  |  |  |
|  | 1 | **Submission of Material** |  | 2026-06-23 | 2026-06-29 |  |  |  |
| ENG-MT-SPS-MC-S-100 |  | Material Submittal for Electromechanical Works for Pump Station | 6d | 2026-06-23 | 2026-06-29 | MS-CS-IR10 SS |  | 2d |
|  | 2 | **Approval of Material** |  | 2026-06-30 | 2026-07-06 |  |  |  |
| ENG-MT-SPS-MC-A-110 |  | Material Approval for Electromechanical Works for Pump Station | 6d | 2026-06-30 | 2026-07-06 | ENG-MT-SPS-MC-S-100 |  | 2d |
|  | SL1 | **Storage Tank (TSE)** |  | 2026-06-23 | 2026-07-20 |  |  |  |
|  | 1 | **Submission of Material** |  | 2026-06-23 | 2026-07-06 |  |  |  |
| ENG-MT-TSE-MC-S-110 |  | Material Submittal for Electromechanical Works for Storage Tank (TSE) | 12d | 2026-06-23 | 2026-07-06 | MS-CS-TE10 SS |  | 3d |
|  | 2 | **Approval of Material** |  | 2026-07-07 | 2026-07-20 |  |  |  |
| ENG-MT-TSE-MC-A-120 |  | Material Approval for Electromechanical Works for Storage Tank (TSE) | 12d | 2026-07-07 | 2026-07-20 | ENG-MT-TSE-MC-S-110 |  | 3d |
|  | PROC | **Procurement Cycle** |  | 2026-05-02 | 2027-02-07 |  |  |  |
|  | NLL | **Short Lead Time Items** |  | 2026-05-02 | 2026-12-26 |  |  |  |
|  | INF | **Infrastructure Networks** |  | 2026-05-02 | 2026-12-26 |  |  |  |
|  | SD | **Storm Drainage Network** |  | 2026-06-23 | 2026-11-04 |  |  |  |
|  | PO | **Issuance of Purchase Orders** |  | 2026-06-23 | 2026-07-30 |  |  |  |
|  | 1 | **Main Line Sections** |  | 2026-06-23 | 2026-06-27 |  |  |  |
| PRO-SD-PO-100 |  | Issuance of Purchase Order for Manholes of Storm Drainage Network | 2d | 2026-06-23 | 2026-06-24 | ENG-MT-SD-ML-A-100, ENG-SH-SD-ML-A-110, ENG-MS-SD-ML-A-110 |  | 0d |
| PRO-SD-PO-110 |  | Issuance of Purchase Order for Main Line Pipes of Storm Drainage Network | 2d | 2026-06-25 | 2026-06-27 | ENG-MT-SD-ML-A-110, ENG-SH-SD-ML-A-110, PRO-SD-PO-100, ENG-MS-DPO-A-130 |  | 0d |
|  | 2 | **Catch Basin Sections** |  | 2026-06-28 | 2026-07-09 |  |  |  |
| PRO-SD-PO-130 |  | Issuance of Purchase Order for Catch Basins of Storm Drainage Network | 5d | 2026-06-28 | 2026-07-02 | ENG-MT-SD-CB-A-100, ENG-SH-SD-CB-A-110, PRO-SD-PO-110, ENG-MS-SD-CB-A-110 |  | 0d |
| PRO-SD-PO-150 |  | Issuance of Purchase Order for Catch Basin Pipes of Storm Drainage Network | 6d | 2026-07-04 | 2026-07-09 | ENG-MT-SD-CB-A-110, ENG-SH-SD-CB-A-110, PRO-SD-PO-130 |  | 0d |
|  | 3 | **Testing and Finishes** |  | 2026-07-11 | 2026-07-23 |  |  |  |
| PRO-SD-PO-120 |  | Issuance of Purchase Order for Manhole Covers of Storm Drainage Network | 6d | 2026-07-11 | 2026-07-16 | ENG-MT-SD-TF-A-100, ENG-SH-SD-ML-A-110, PRO-SD-PO-150 |  | 0d |
| PRO-SD-PO-140 |  | Issuance of Purchase Order for Catch Basin Covers of Storm Drainage Network | 6d | 2026-07-18 | 2026-07-23 | ENG-MT-SD-TF-A-110, ENG-SH-SD-CB-A-110, PRO-SD-PO-120 |  | 0d |
|  | TE1 | **Storm Drainage Ponds** |  | 2026-07-25 | 2026-07-30 |  |  |  |
| PRO-DPO-CV-PO-10 |  | Issuance of Purchase Order for Materials of Storm Drainage Ponds | 6d | 2026-07-25 | 2026-07-30 | ENG-MT-DPO-CV-A-110, ENG-SH-DPO-A-120, PRO-SD-PO-140, ENG-MS-DPO-A-130, MS-CF-ENG |  | 0d |
|  | MF | **Manufacturing of Material** |  | 2026-06-25 | 2026-10-14 |  |  |  |
|  | 1 | **Main Line Sections** |  | 2026-06-25 | 2026-07-25 |  |  |  |
| PRO-SD-MF-100 |  | Manufacturing of Materials for Manholes of Storm Drainage Network | 8d | 2026-06-25 | 2026-07-04 | PRO-SD-PO-100 |  | 4d |
| PRO-SD-MF-110 |  | Manufacturing of Materials for Main Line Pipes of Storm Drainage Network | 24d | 2026-06-28 | 2026-07-25 | PRO-SD-PO-110 |  | 0d |
|  | 2 | **Catch Basin Sections** |  | 2026-07-04 | 2026-08-08 |  |  |  |
| PRO-SD-MF-130 |  | Manufacturing of Materials for Catch Basins of Storm Drainage Network | 25d | 2026-07-04 | 2026-08-01 | PRO-SD-PO-130 |  | 18d |
| PRO-SD-MF-150 |  | Manufacturing of Materials for Catch Basin Pipes of Storm Drainage Network | 25d | 2026-07-11 | 2026-08-08 | PRO-SD-PO-150 |  | 3d |
|  | 3 | **Testing and Finishes** |  | 2026-08-09 | 2026-10-06 |  |  |  |
| PRO-SD-MF-120 |  | Manufacturing of Materials for Manhole Covers of Storm Drainage Network | 20d | 2026-08-09 | 2026-08-31 | PRO-SD-PO-120, PRO-SD-MF-150 |  | 3d |
| PRO-SD-MF-140 |  | Manufacturing of Materials for Catch Basin Covers of Storm Drainage Network | 30d | 2026-09-01 | 2026-10-06 | PRO-SD-PO-140, PRO-SD-MF-120 |  | 3d |
|  | TE | **Storm Drainage Ponds** |  | 2026-08-01 | 2026-10-14 |  |  |  |
| PRO-DPO-CV-MF-10 |  | Manufacturing of Materials of Storm Drainage Ponds | 64d | 2026-08-01 | 2026-10-14 | PRO-DPO-CV-PO-10 |  | 0d |
|  | 1DL | **1st Material Delivery & Site Inspection** |  | 2026-07-05 | 2026-10-19 |  |  |  |
|  | 1 | **Main Line Sections** |  | 2026-07-05 | 2026-07-29 |  |  |  |
| PRO-SD-1DL-100 |  | 1ST Material Delivery for Manholes of Storm Drainage Network | 4d | 2026-07-05 | 2026-07-08 | PRO-SD-MF-100 |  | 4d |
| PRO-SD-1DL-110 |  | 1ST Material Delivery for Main Line Pipes of Storm Drainage Network | 4d | 2026-07-26 | 2026-07-29 | PRO-SD-MF-110, PRO-SD-1DL-100, MS-CF-ENG |  | 0d |
|  | 2 | **Catch Basin Sections** |  | 2026-08-02 | 2026-08-12 |  |  |  |
| PRO-SD-1DL-130 |  | 1ST Material Delivery for Catch Basins of Storm Drainage Network | 4d | 2026-08-02 | 2026-08-05 | PRO-SD-MF-130, PRO-SD-1DL-110 |  | 18d |
| PRO-SD-1DL-120 |  | 1ST Material Delivery for Catch Basin Pipes of Storm Drainage Network | 4d | 2026-08-09 | 2026-08-12 | PRO-SD-MF-150, PRO-SD-1DL-130 |  | 20d |
|  | 3 | **Testing and Finishes** |  | 2026-09-01 | 2026-10-11 |  |  |  |
| PRO-SD-1DL-140 |  | 1ST Material Delivery for Manholes Covers of Storm Drainage Network | 4d | 2026-09-01 | 2026-09-05 | PRO-SD-MF-120, PRO-SD-1DL-120, PRO-MV-1DL-100 |  | 7d |
| PRO-SD-1DL-150 |  | 1ST Material Delivery for Catch Basin Covers of Storm Drainage Network | 4d | 2026-10-07 | 2026-10-11 | PRO-SD-MF-140, PRO-SD-1DL-140 |  | 3d |
|  | TE2 | **Storm Drainage Ponds** |  | 2026-10-15 | 2026-10-19 |  |  |  |
| PRO-DPO-CV-1DL-10 |  | 1ST Material Delivery for Materials of Drainage Ponds | 4d | 2026-10-15 | 2026-10-19 | PRO-DPO-CV-MF-10, PRO-SD-1DL-150 |  | 0d |
|  | DL | **Material Delivery & Site Inspection** |  | 2026-07-09 | 2026-11-04 |  |  |  |

| ID | WBS | Task | Duration | Start | Finish | Predecessors | Complete | Total float |
| --- | --- | --- | --- | --- | --- | --- | --- | --- |
|  | 1 | **Main Line Sections** |  | 2026-07-09 | 2026-08-16 |  |  |  |
| PRO-R25-SD-DL-100 |  | Material Delivery & Site Inspection of Manholes of Storm Drainage Network | 10d | 2026-07-09 | 2026-07-20 | PRO-SD-1DL-100 |  | 4d |
| PRO-R25-SD-DL-120 |  | Material Delivery & Site Inspection of Main Line Pipes of Storm Drainage Network | 15d | 2026-07-30 | 2026-08-16 | PRO-SD-1DL-110 |  | 0d |
|  | 2 | **Catch Basin Sections** |  | 2026-08-06 | 2026-08-23 |  |  |  |
| PRO-R25-SD-DL-130 |  | Material Delivery & Site Inspection of Catch Basins for Storm Drainage Network | 8d | 2026-08-06 | 2026-08-15 | PRO-SD-1DL-130 |  | 18d |
| PRO-R25-SD-DL-110 |  | Material Delivery & Site Inspection of Catch Basin Pipes for Storm Drainage Network | 7d | 2026-08-16 | 2026-08-23 | PRO-SD-1DL-120, PRO-R25-SD-DL-130 |  | 18d |
|  | 3 | **Testing and Finishes** |  | 2026-09-06 | 2026-10-27 |  |  |  |
| PRO-R25-SD-DL-140 |  | Material Delivery & Site Inspection of Manholes Covers for Storm Drainage Network | 20d | 2026-09-06 | 2026-09-29 | PRO-SD-1DL-140, PRO-R25-SD-DL-110 |  | 7d |
| PRO-R25-SD-DL-150 |  | Material Delivery & Site Inspection of Catch Basin Covers for Storm Drainage Network | 14d | 2026-10-12 | 2026-10-27 | PRO-SD-1DL-150, PRO-R25-SD-DL-140 SS |  | 7d |
|  | TE3 | **Storm Drainage Ponds** |  | 2026-10-20 | 2026-11-04 |  |  |  |
| PRO-DPO-CV-DL-10 |  | Material Delivery & Site Inspection for Materials of Storm Drainage Ponds | 14d | 2026-10-20 | 2026-11-04 | PRO-DPO-CV-1DL-10, PRO-R25-SD-DL-150 SS, PRO-R25-TSE-DL-120, PRO-LV-TT-1DL-100, PRO-R25-IR-DL-140 |  | 0d |
|  | SW | **Sewage Network** |  | 2026-06-23 | 2026-08-09 |  |  |  |
|  | PO | **Issuance of Purchase Orders** |  | 2026-06-23 | 2026-07-16 |  |  |  |
|  | 1 | **Main Line Sections** |  | 2026-06-23 | 2026-07-08 |  |  |  |
| PRO-SW-PO-100 |  | Issuance of Purchase Order for Main Line Pipes of Sewage Network | 7d | 2026-06-23 | 2026-06-30 | ENG-MT-SW-ML-A-110, ENG-SH-SW-ML-A-110, ENG-MS-SW-ML-A-110 |  | 8d |
| PRO-SW-PO-110 |  | Issuance of Purchase Order for Manhole of Sewage Network | 7d | 2026-07-01 | 2026-07-08 | ENG-MT-SW-ML-A-100, ENG-SH-SW-ML-A-110, PRO-SW-PO-100 |  | 8d |
|  | 3 | **Testing and Finishes** |  | 2026-07-09 | 2026-07-16 |  |  |  |
| PRO-SW-PO-120 |  | Issuance of Purchase Order for Manhole Covers of Sewage Network | 7d | 2026-07-09 | 2026-07-16 | ENG-MT-SW-TF-A-100, ENG-SH-SW-ML-A-110, PRO-SW-PO-110 |  | 8d |
|  | MF | **Manufacturing of Material** |  | 2026-07-01 | 2026-07-23 |  |  |  |
|  | 1 | **Main Line Sections** |  | 2026-07-01 | 2026-07-20 |  |  |  |
| PRO-SW-MF-100 |  | Manufacturing of Main Line Pipes for Sewage Network | 10d | 2026-07-01 | 2026-07-12 | PRO-SW-PO-100 |  | 34d |
| PRO-SW-MF-110 |  | Manufacturing of Manholes for Sewage Network | 10d | 2026-07-09 | 2026-07-20 | PRO-SW-PO-110, PRO-SW-MF-100 SS |  | 31d |
|  | 3 | **Testing and Finishes** |  | 2026-07-18 | 2026-07-23 |  |  |  |
| PRO-SW-MF-120 |  | Manufacturing of Manhole Covers for Sewage Network | 6d | 2026-07-18 | 2026-07-23 | PRO-SW-PO-120, PRO-SW-MF-110 SS |  | 28d |
|  | 1DL | **1st Material Delivery & Site Inspection** |  | 2026-07-13 | 2026-07-30 |  |  |  |
|  | 1 | **Main Line Sections** |  | 2026-07-13 | 2026-07-28 |  |  |  |
| PRO-SW-1DL-100 |  | 1ST Material Delivery for Main Line Pipes of Sewage Network | 4d | 2026-07-13 | 2026-07-16 | PRO-SW-MF-100 |  | 34d |
| PRO-SW-1DL-110 |  | 1ST Material Delivery for Manholes of Sewage Network | 4d | 2026-07-25 | 2026-07-28 | PRO-SW-MF-110, PRO-SW-1DL-100, PRO-SW-MF-120, MS-CF-ENG |  | 28d |
|  | 3 | **Testing and Finishes** |  | 2026-07-29 | 2026-07-30 |  |  |  |
| PRO-SW-1DL-120 |  | 1ST Material Delivery for Manholes Covers of Sewage Network | 2d | 2026-07-29 | 2026-07-30 | PRO-SW-MF-120, PRO-SW-1DL-110 |  | 30d |
|  | DL | **Material Delivery & Site Inspection** |  | 2026-07-29 | 2026-08-09 |  |  |  |
|  | 1 | **Main Line Sections** |  | 2026-07-29 | 2026-08-09 |  |  |  |
| PRO-R25-SW-DL-110 |  | Material Delivery & Site Inspection of Manholes for Sewage Network | 4d | 2026-07-29 | 2026-08-02 | PRO-SW-1DL-110 |  | 28d |
| PRO-R25-SW-DL-100 |  | Material Delivery & Site Inspection of Main Line Pipes for Sewage Network | 4d | 2026-08-05 | 2026-08-09 | PRO-SW-1DL-100, PRO-R25-SW-DL-110, PRO-SW-1DL-120, PRO-R25-SW-DL-120 |  | 30d |
|  | 3 | **Testing and Finishes** |  | 2026-08-01 | 2026-08-04 |  |  |  |
| PRO-R25-SW-DL-120 |  | Material Delivery & Site Inspection of Manholes Covers for Sewage Network | 4d | 2026-08-01 | 2026-08-04 | PRO-SW-1DL-120 |  | 30d |
|  | TSE | **Treated Sewage Effluent (Tse)** |  | 2026-06-23 | 2026-08-22 |  |  |  |
|  | PO | **Issuance of Purchase Orders** |  | 2026-06-23 | 2026-06-30 |  |  |  |
| PRO-TSE-PO-120 |  | Issuance of Purchase Order for Materials of Treated Sewage Effluent (Tse) | 7d | 2026-06-23 | 2026-06-30 | ENG-MT-IR-ML-A-120, ENG-SH-TSE-ML-A-120, ENG-MS-TSE-ML-A-120 |  | 18d |
|  | MF | **Manufacturing of Material** |  | 2026-07-01 | 2026-07-28 |  |  |  |
| PRO-TSE-MF-120 |  | Manufacturing of Materials for Treated Sewage Effluent (Tse) | 24d | 2026-07-01 | 2026-07-28 | PRO-TSE-PO-120 |  | 18d |
|  | 1DL | **1st Material Delivery & Site Inspection** |  | 2026-07-29 | 2026-08-05 |  |  |  |
| PRO-TSE-1DL-120 |  | 1ST Material Delivery for Materials of Treated Sewage Effluent (Tse) | 7d | 2026-07-29 | 2026-08-05 | PRO-TSE-MF-120, MS-CF-ENG |  | 18d |
|  | DL | **Material Delivery & Site Inspection** |  | 2026-08-06 | 2026-08-22 |  |  |  |
| PRO-R25-TSE-DL-120 |  | Material Delivery & Site Inspection of Materials for Treated Sewage Effluent (Tse) | 14d | 2026-08-06 | 2026-08-22 | PRO-TSE-1DL-120 |  | 18d |
|  | PW | **Potable Water Network** |  | 2026-05-02 | 2026-11-26 |  |  |  |
|  | PO | **Issuance of Purchase Orders** |  | 2026-05-02 | 2026-07-05 |  |  |  |
|  | 1 | **Main Line Sections** |  | 2026-05-02 | 2026-05-12 |  |  |  |
| PRO-PW-PO-100 |  | Issuance of Purchase Order for Main Line Pipes and Materials of Potable Water Network | 11d | 2026-05-02 A | 2026-05-12 A | ENG-MT-PW-ML-A-100, ENG-SH-PW-ML-A-110, ENG-MS-PW-ML-A-110, ENG-MS-MV-A-110 | 100% |  |
| PRO-PW-PO-110 |  | Issuance of Purchase Order for Valves of Potable Water Network | 11d | 2026-05-02 A | 2026-05-12 A | ENG-MT-PW-ML-A-110, ENG-SH-PW-ML-A-110, PRO-PW-PO-100, ENG-MS-HS-A-10 | 100% |  |
|  | 3 | **Fire Hydrant** |  | 2026-06-23 | 2026-06-28 |  |  |  |
| PRO-PW-PO-120 |  | Issuance of Purchase Order for Fire Hydrants of Potable Water Network | 5d | 2026-06-23 | 2026-06-28 | ENG-MT-PW-FH-A-100, ENG-SH-PW-FH-A-110, PRO-PW-PO-110 |  | 8d |
|  | 4 | **Testing and Finishes** |  | 2026-06-29 | 2026-07-05 |  |  |  |
| PRO-PW-PO-130 |  | Issuance of Purchase Order for Surface Box of Potable Water Network | 6d | 2026-06-29 | 2026-07-05 | ENG-MT-PW-TF-A-100, ENG-SH-PW-ML-A-110, PRO-PW-PO-120 |  | 8d |
|  | MF | **Manufacturing of Material** |  | 2026-06-23 | 2026-09-15 |  |  |  |
|  | 1 | **Main Line Sections** |  | 2026-06-23 | 2026-08-29 |  |  |  |
| PRO-PW-MF-100 |  | Manufacturing of Main Line Pipes and Materials for Potable Water Network | 34d | 2026-06-23 | 2026-08-01 | PRO-PW-PO-100 |  | 25d |
| PRO-PW-MF-110 |  | Manufacturing of Valves for Potable Water Network | 24d | 2026-08-02 | 2026-08-29 | PRO-PW-PO-110, PRO-PW-MF-100 |  | 25d |
|  | 3 | **Fire Hydrant** |  | 2026-08-30 | 2026-09-15 |  |  |  |
| PRO-PW-MF-120 |  | Manufacturing of Fire Hydrants for Potable Water Network | 15d | 2026-08-30 | 2026-09-15 | PRO-PW-PO-120, PRO-PW-MF-110 |  | 25d |
|  | 4 | **Testing and Finishes** |  | 2026-07-06 | 2026-09-01 |  |  |  |
| PRO-PW-MF-130 |  | Manufacturing for Surface Box of Potable Water Network | 50d | 2026-07-06 | 2026-09-01 | PRO-PW-PO-130 |  | 8d |
|  | 1DL | **1st Material Delivery & Site Inspection** |  | 2026-09-02 | 2026-09-24 |  |  |  |
|  | 1 | **Main Line Sections** |  | 2026-09-02 | 2026-09-17 |  |  |  |
| PRO-PW-1DL-100 |  | 1ST Material Delivery for Main Line Pipes and Materials of Potable Water Network | 7d | 2026-09-02 | 2026-09-09 | PRO-PW-MF-100, PRO-PW-MF-130 |  | 8d |
| PRO-PW-1DL-110 |  | 1ST Material Delivery for Valves of Potable Water Network | 7d | 2026-09-10 | 2026-09-17 | PRO-PW-MF-110, PRO-PW-1DL-100 |  | 22d |
|  | 3 | **Fire Hydrant** |  | 2026-09-16 | 2026-09-24 |  |  |  |
| PRO-PW-1DL-120 |  | 1ST Material Delivery for Fire Hydrants of Potable Water Network | 7d | 2026-09-16 | 2026-09-24 | PRO-PW-MF-120, PRO-PW-1DL-110 SS |  | 25d |
|  | 4 | **Testing and Finishes** |  | 2026-09-02 | 2026-09-09 |  |  |  |
| PRO-PW-1DL-130 |  | 1ST Material Delivery for Finishes of Potable Water Network | 7d | 2026-09-02 | 2026-09-09 | PRO-PW-MF-130 |  | 36d |

| ID | WBS | Task | Duration | Start | Finish | Predecessors | Total float |
| --- | --- | --- | --- | --- | --- | --- | --- |
|  | DL | **Material Delivery & Site Inspection** |  | 2026-09-10 | 2026-11-26 |  |  |
|  | 1 | **Main Line Sections** |  | 2026-09-10 | 2026-10-29 |  |  |
| PRO-R25-PW-DL-100 |  | Material Delivery & Site Inspection of Main Line Pipes and Materials for Potable Water Network | 21d | 2026-09-10 | 2026-10-05 | PRO-PW-1DL-100 | 8d |
| PRO-R25-PW-DL-110 |  | Material Delivery & Site Inspection of Valves for Potable Water Network | 21d | 2026-10-06 | 2026-10-29 | PRO-PW-1DL-110, PRO-R25-PW-DL-100 | 8d |
|  | 3 | **Fire Hydrant** |  | 2026-09-26 | 2026-10-01 |  |  |
| PRO-R25-PW-DL-120 |  | Material Delivery & Site Inspection of Fire Hydrants for Potable Water Network | 6d | 2026-09-26 | 2026-10-01 | PRO-PW-1DL-120 | 29d |
|  | 4 | **Testing and Finishes** |  | 2026-09-10 | 2026-11-26 |  |  |
| PRO-R25-PW-DL-130 |  | Material Delivery & Site Inspection for Finishes of Potable Water Network | 66d | 2026-09-10 | 2026-11-26 | PRO-PW-1DL-130 | 36d |
|  | IR | **Irrigation Network** |  | 2026-07-06 | 2026-10-01 |  |  |
|  | PO | **Issuance of Purchase Orders** |  | 2026-07-06 | 2026-07-15 |  |  |
|  | 1 | **Main Line Pipes** |  | 2026-07-06 | 2026-07-15 |  |  |
| PRO-IR-PO-100 |  | Issuance of Purchase Order for Main Line Pipes of Irrigation Network | 5d | 2026-07-06 | 2026-07-11 | ENG-MT-IR-ML-A-100, ENG-SH-IR-ML-A-110, PRO-PW-PO-130, ENG-MS-IR-ML-A-110, ENG-MS-MV-A-120, ENG-MS-SL-A-110, ENG-MS-TE-A-110, ENG-MS-CTV-A-110 | 9d |
| PRO-IR-PO-110 |  | Issuance of Purchase Order for Valves of Irrigation Network | 4d | 2026-07-12 | 2026-07-15 | ENG-MT-IR-ML-A-110, ENG-SH-IR-ML-A-110, PRO-IR-PO-100 | 9d |
|  | MF | **Manufacturing of Material** |  | 2026-07-12 | 2026-08-29 |  |  |
|  | 1 | **Main Line Pipes** |  | 2026-07-12 | 2026-08-29 |  |  |
| PRO-IR-MF-100 |  | Manufacturing of Main Line Pipes for Irrigation Network | 21d | 2026-07-12 | 2026-08-04 | PRO-IR-PO-100 | 30d |
| PRO-IR-MF-110 |  | Manufacturing of Valves for Irrigation Network | 21d | 2026-08-05 | 2026-08-29 | PRO-IR-PO-110, PRO-IR-MF-100 | 30d |
|  | 1DL | **1st Material Delivery & Site Inspection** |  | 2026-08-05 | 2026-09-06 |  |  |
|  | 1 | **Main Line Pipes** |  | 2026-08-05 | 2026-09-06 |  |  |
| PRO-IR-1DL-100 |  | 1ST Material Delivery for Main Line Pipes of Irrigation Network | 7d | 2026-08-05 | 2026-08-12 | PRO-IR-MF-100 | 30d |
| PRO-IR-1DL-110 |  | 1ST Material Delivery for Valves of Irrigation Network | 7d | 2026-08-30 | 2026-09-06 | PRO-IR-MF-110, PRO-IR-1DL-100 | 30d |
|  | DL | **Material Delivery & Site Inspection** |  | 2026-08-13 | 2026-10-01 |  |  |
|  | 1 | **Main Line Pipes** |  | 2026-08-13 | 2026-10-01 |  |  |
| PRO-R25-IR-DL-100 |  | Material Delivery & Site Inspection of Main Line Pipes for Irrigation Network | 21d | 2026-08-13 | 2026-09-06 | PRO-IR-1DL-100 | 30d |
| PRO-R25-IR-DL-110 |  | Material Delivery & Site Inspection of Valves for Irrigation Network | 21d | 2026-09-07 | 2026-10-01 | PRO-IR-1DL-110, PRO-R25-IR-DL-100 | 30d |
|  | MV | **Medium Voltage Network** |  | 2026-07-16 | 2026-10-01 |  |  |
|  | PO | **Issuance of Purchase Orders** |  | 2026-07-16 | 2026-07-22 |  |  |
| PRO-MV-PO-100 |  | Issuance of Purchase Order for Medium Voltage Materials of Medium Voltage Network | 6d | 2026-07-16 | 2026-07-22 | ENG-MT-MV-ML-A-100, ENG-SH-MV-A-110, PRO-IR-PO-110, ENG-MS-MV-A-110 | 9d |
|  | MF | **Manufacturing of Material** |  | 2026-07-23 | 2026-08-16 |  |  |
| PRO-MV-MF-100 |  | Manufacturing of Medium Voltage Materials for Medium Voltage Network | 21d | 2026-07-23 | 2026-08-16 | PRO-MV-PO-100 | 13d |
|  | 1DL | **1st Material Delivery & Site Inspection** |  | 2026-08-17 | 2026-08-24 |  |  |
| PRO-MV-1DL-100 |  | 1ST Material Delivery for Medium Voltage Materials of Medium Voltage Network | 7d | 2026-08-17 | 2026-08-24 | PRO-MV-MF-100 | 13d |
|  | DL | **Material Delivery & Site Inspection** |  | 2026-09-07 | 2026-10-01 |  |  |
| PRO-MV-DL-100 |  | Material Delivery & Site Inspection of Medium Voltage Materials for Medium Voltage Network | 21d | 2026-09-07 | 2026-10-01 | PRO-MV-1DL-100, PRO-R25-IR-DL-110 FF | 31d |
|  | LV | **Low Voltage Network** |  | 2026-06-23 | 2026-11-29 |  |  |
|  | PO | **Issuance of Purchase Orders** |  | 2026-06-23 | 2026-07-25 |  |  |
|  | 1 | **Main Low Voltage Cables Works** |  | 2026-06-23 | 2026-06-30 |  |  |
| PRO-LV-ML-PO-100 |  | Issuance of Purchase Order for Main Low Voltage Cables of Low Voltage Network | 7d | 2026-06-23 | 2026-06-30 | PRO-LV-ML-A-100, ENG-SH-LV-A-120, ENG-MS-MV-A-120 | 2d |
|  | 2 | **Service Low Voltage Cables Works** |  | 2026-06-23 | 2026-06-30 |  |  |
| PRO-LV-HC-PO-100 |  | Issuance of Purchase Order for Service Low Voltage Cables of Low Voltage Network | 7d | 2026-06-23 | 2026-06-30 | PRO-LV-HC-A-100, ENG-SH-LV-A-120 | 0d |
|  | 3 | **Distribution Pillar Works** |  | 2026-07-01 | 2026-07-16 |  |  |
| PRO-LV-DP-PO-100 |  | Issuance of Purchase Order for Distribution Pillars of Low Voltage Network | 7d | 2026-07-01 | 2026-07-08 | PRO-LV-DP-A-100, ENG-SH-LV-A-120, PRO-LV-HC-PO-100 | 0d |
| PRO-LV-DP-PO-110 |  | Issuance of Purchase Order for Low Voltage Earthing of Low Voltage Network | 7d | 2026-07-09 | 2026-07-16 | PRO-LV-DP-A-110, ENG-SH-LV-A-120, PRO-LV-DP-PO-100 | 0d |
|  | 4 | **Termination and Testing Works** |  | 2026-07-18 | 2026-07-25 |  |  |
| PRO-LV-TT-PO-100 |  | Issuance of Purchase Order for Cable Lugs of Low Voltage Network | 7d | 2026-07-18 | 2026-07-25 | PRO-LV-TT-A-100, ENG-SH-LV-A-120, PRO-LV-DP-PO-110 | 3d |
|  | MF | **Manufacturing of Material** |  | 2026-07-01 | 2026-10-15 |  |  |
|  | 1 | **Main Low Voltage Cables Works** |  | 2026-07-01 | 2026-08-04 |  |  |
| PRO-LV-ML-MF-100 |  | Manufacturing of Main Low Voltage Cables for Low Voltage Network | 30d | 2026-07-01 | 2026-08-04 | PRO-LV-ML-PO-100 | 2d |
|  | 2 | **Service Low Voltage Cables Works** |  | 2026-07-01 | 2026-08-04 |  |  |
| PRO-LV-HC-MF-100 |  | Manufacturing of Service Low Voltage Cables for Low Voltage Network | 30d | 2026-07-01 | 2026-08-04 | PRO-LV-HC-PO-100, PRO-LV-ML-MF-100 SS | 24d |
|  | 3 | **Distribution Pillar Works** |  | 2026-07-09 | 2026-09-01 |  |  |
| PRO-LV-DP-MF-100 |  | Manufacturing of Distribution Pillars for Low Voltage Network | 40d | 2026-07-09 | 2026-08-24 | PRO-LV-DP-PO-100, PRO-LV-HC-MF-100 SS | 17d |
| PRO-LV-DP-MF-110 |  | Manufacturing of Low Voltage Earthing for Low Voltage Network | 40d | 2026-07-18 | 2026-09-01 | PRO-LV-DP-PO-110, PRO-LV-DP-MF-100 SS | 10d |
|  | 4 | **Termination and Testing Works** |  | 2026-07-26 | 2026-10-15 |  |  |
| PRO-LV-TT-MF-100 |  | Manufacturing of Cable Lugs for Low Voltage Network | 70d | 2026-07-26 | 2026-10-15 | PRO-LV-TT-PO-100, PRO-LV-DP-MF-110 SS | 3d |
|  | 1DL | **1st Delivery of Material to Site** |  | 2026-08-05 | 2026-10-17 |  |  |
|  | 1 | **Main Low Voltage Cables Works** |  | 2026-08-05 | 2026-09-13 |  |  |
| PRO-LV-ML-1DL-100 |  | 1ST Material Delivery for Main Low Voltage Cables of Low Voltage Network | 34d | 2026-08-05 | 2026-09-13 | PRO-LV-ML-MF-100 | 2d |
|  | 2 | **Service Low Voltage Cables Works** |  | 2026-09-14 | 2026-09-21 |  |  |
| PRO-LV-HC-1DL-100 |  | 1ST Material Delivery for Service Low Voltage Cables of Low Voltage Network | 7d | 2026-09-14 | 2026-09-21 | PRO-LV-HC-MF-100, PRO-LV-ML-1DL-100 | 2d |
|  | 3 | **Distribution Pillar Works** |  | 2026-09-22 | 2026-10-08 |  |  |
| PRO-LV-DP-1DL-100 |  | 1ST Material Delivery for Distribution Pillars of Low Voltage Network | 7d | 2026-09-22 | 2026-09-30 | PRO-LV-DP-MF-100, PRO-LV-HC-1DL-100 | 2d |
| PRO-LV-DP-1DL-110 |  | 1ST Material Delivery for Low Voltage Earthing of Low Voltage Network | 7d | 2026-10-01 | 2026-10-08 | PRO-LV-DP-MF-110, PRO-LV-DP-1DL-100 | 2d |
|  | 4 | **Termination and Testing Works** |  | 2026-10-10 | 2026-10-17 |  |  |
| PRO-LV-TT-1DL-100 |  | 1ST Material Delivery for Cable Lugs of Low Voltage Network | 7d | 2026-10-10 | 2026-10-17 | PRO-LV-TT-MF-100 SS, PRO-LV-TT-MF-100 FF, PRO-LV-DP-1DL-110 | 2d |
|  | DL | **Delivery of Material to Site** |  | 2026-09-14 | 2026-11-29 |  |  |
|  | 1 | **Main Low Voltage Cables Works** |  | 2026-09-14 | 2026-09-21 |  |  |
| PRO-LV-ML-DL-100 |  | Material Delivery of Main Low Voltage Cables for Low Voltage Network | 7d | 2026-09-14 | 2026-09-21 | PRO-LV-ML-1DL-100 | 10d |
|  | 2 | **Service Low Voltage Cables Works** |  | 2026-09-22 | 2026-10-17 |  |  |
| PRO-LV-HC-DL-100 |  | Material Delivery of Service Low Voltage Cables for Low Voltage Network | 21d | 2026-09-22 | 2026-10-17 | PRO-LV-HC-1DL-100, PRO-LV-ML-DL-100 | 10d |

| ID | WBS | Task | Duration | Start | Finish | Predecessors | Total float |
| --- | --- | --- | --- | --- | --- | --- | --- |
|  | 3 | **Distribution Pillar Works** |  | 2026-10-17 | 2026-11-08 |  |  |
| PRO-LV-DP-DL-120 |  | Material Delivery of Low Voltage Earthing for Low Voltage Network | 20d | 2026-10-17 | 2026-11-08 | PRO-LV-DP-1DL-110, PRO-LV-DP-DL-100 FF | 10d |
| PRO-LV-DP-DL-100 |  | Material Delivery of Distribution Pillars for Low Voltage Network | 19d | 2026-10-18 | 2026-11-08 | PRO-LV-DP-1DL-100, PRO-LV-HC-DL-100 | 10d |
|  | 4 | **Termination and Testing Works** |  | 2026-11-09 | 2026-11-29 |  |  |
| PRO-LV-TT-DL-100 |  | Material Delivery of Cable Lugs for Low Voltage Network | 18d | 2026-11-09 | 2026-11-29 | PRO-LV-TT-1DL-100, PRO-LV-DP-DL-120 | 33d |
|  | SL | **Street Lighting Network** |  | 2026-07-18 | 2026-12-16 |  |  |
|  | PO | **Issuance of Purchase Orders** |  | 2026-07-18 | 2026-08-05 |  |  |
|  | 1 | **Cabling Works** |  | 2026-07-18 | 2026-07-22 |  |  |
| PRO-SL-PO-100 |  | Issuance of Purchase Order for Lighting Cables of Street Lighting Network | 5d | 2026-07-18 | 2026-07-22 | ENG-MT-SL-ML-A-100, ENG-SH-SL-A-110, PRO-SW-PO-120, PRO-MV-PO-100 SS, ENG-MS-SL-A-110 | 8d |
|  | 2 | **Lighting Poles Works** |  | 2026-07-18 | 2026-07-22 |  |  |
| PRO-SL-PO-110 |  | Issuance of Purchase Order for Lighting Poles Foundations of Street Lighting Network | 5d | 2026-07-18 | 2026-07-22 | ENG-MT-SL-S-100, ENG-MT-SL-A-100, ENG-SH-SL-A-110, PRO-SL-PO-100 SS | 12d |
| PRO-SL-PO-120 |  | Issuance of Purchase Order for Lighting Poles of Street Lighting Network | 5d | 2026-07-18 | 2026-07-22 | ENG-MT-SL-S-110, ENG-MT-SL-A-110, ENG-SH-SL-A-110, PRO-SL-PO-110 SS | 12d |
| PRO-SL-PO-140 |  | Issuance of Purchase Order for Lighting Fixtures of Street Lighting Network | 5d | 2026-07-18 | 2026-07-22 | ENG-MT-SL-S-120, ENG-MT-SL-A-120, ENG-SH-SL-A-110, PRO-SL-PO-120 SS | 12d |
|  | 3 | **Distribution Panel Board** |  | 2026-07-18 | 2026-07-23 |  |  |
| PRO-SL-PO-160 |  | Issuance of Purchase Order for Distrubution Panel Boards of Street Lighting Network | 6d | 2026-07-18 | 2026-07-23 | ENG-MT-SL-DB-S-100, ENG-MT-SL-DB-A-100, ENG-SH-SL-A-110, PRO-SL-PO-140 SS | 28d |
|  | 4 | **Earthing System Works** |  | 2026-07-30 | 2026-08-05 |  |  |
| PRO-SL-PO-150 |  | Issuance of Purchase Order for Lighting Earthing of Street Lighting Network | 6d | 2026-07-30 | 2026-08-05 | ENG-MT-SL-ES-S-100, ENG-MT-SL-ES-A-100, ENG-SH-SL-A-110, PRO-SL-PO-170 | 12d |
|  | 5 | **Termination and Testing Works** |  | 2026-07-23 | 2026-07-30 |  |  |
| PRO-SL-PO-170 |  | Issuance of Purchase Order for Cable Lugs of Street Lighting Network | 6d | 2026-07-23 | 2026-07-29 | ENG-MT-SL-TF-S-110, ENG-MT-SL-TF-A-110, ENG-SH-SL-A-110, PRO-SL-PO-140 | 12d |
| PRO-SL-PO-130 |  | Issuance of Purchase Order for Fuse Boxes of Street Lighting Network | 6d | 2026-07-25 | 2026-07-30 | ENG-MT-SL-TF-S-100, ENG-MT-SL-TF-A-100, ENG-SH-SL-A-110, PRO-SL-PO-160 | 28d |
|  | MF | **Manufacturing of Material** |  | 2026-07-23 | 2026-11-15 |  |  |
|  | 1 | **Cabling Works** |  | 2026-07-23 | 2026-08-15 |  |  |
| PRO-SL-MF-100 |  | Manufacturing of Lighting Cables for Street Lighting Network | 20d | 2026-07-23 | 2026-08-15 | PRO-SL-PO-100 | 8d |
|  | 2 | **Lighting Poles Works** |  | 2026-08-16 | 2026-09-08 |  |  |
| PRO-SL-MF-110 |  | Manufacturing of Lighting Poles Foundations for Street Lighting Network | 21d | 2026-08-16 | 2026-09-08 | PRO-SL-PO-110, PRO-SL-MF-100 | 8d |
| PRO-SL-MF-120 |  | Manufacturing of Lighting Poles for Street Lighting Network | 21d | 2026-08-16 | 2026-09-08 | PRO-SL-PO-120, PRO-SL-MF-110 SS | 14d |
| PRO-SL-MF-140 |  | Manufacturing of Lighting Fixtures for Street Lighting Network | 21d | 2026-08-16 | 2026-09-08 | PRO-SL-PO-140, PRO-SL-MF-120 SS | 14d |
|  | 3 | **Distribution Panel Board** |  | 2026-09-09 | 2026-10-14 |  |  |
| PRO-SL-MF-160 |  | Manufacturing of Distrubution Panel Boards for Street Lighting Network | 30d | 2026-09-09 | 2026-10-14 | PRO-SL-PO-160, PRO-SL-MF-140 | 14d |
|  | 4 | **Earthing System Works** |  | 2026-08-06 | 2026-09-21 |  |  |
| PRO-SL-MF-150 |  | Manufacturing of Lighting Earthing for Street Lighting Network | 40d | 2026-08-06 | 2026-09-21 | PRO-SL-PO-150 | 12d |
|  | 5 | **Termination and Testing Works** |  | 2026-08-01 | 2026-11-15 |  |  |
| PRO-SL-MF-130 |  | Manufacturing of Fuse Boxes for Street Lighting Network | 70d | 2026-08-01 | 2026-10-21 | PRO-SL-PO-130 | 28d |
| PRO-SL-MF-170 |  | Manufacturing of Cable Lugs for Street Lighting Network | 21d | 2026-10-22 | 2026-11-15 | PRO-SL-PO-170, PRO-SL-MF-130 | 28d |
|  | 1DL | **1st Material Delivery & Site Inspection** |  | 2026-08-16 | 2026-11-29 |  |  |
|  | 1 | **Cabling Works** |  | 2026-08-16 | 2026-08-22 |  |  |
| PRO-SL-1DL-100 |  | 1ST Material Delivery for Lighting Cables of Street Lighting Network | 6d | 2026-08-16 | 2026-08-22 | PRO-SL-MF-100 | 23d |
|  | 2 | **Lighting Poles Works** |  | 2026-09-09 | 2026-09-30 |  |  |
| PRO-SL-1DL-110 |  | 1ST Material Delivery for Lighting Poles Foundations of Street Lighting Network | 6d | 2026-09-09 | 2026-09-15 | PRO-SL-MF-110, PRO-SL-1DL-100 | 8d |
| PRO-SL-1DL-120 |  | 1ST Material Delivery for Lighting Poles of Street Lighting Network | 6d | 2026-09-16 | 2026-09-22 | PRO-SL-MF-120, PRO-SL-1DL-110 | 11d |
| PRO-SL-1DL-140 |  | 1ST Material Delivery for Lighting Fixtures of Street Lighting Network | 6d | 2026-09-24 | 2026-09-30 | PRO-SL-MF-140, PRO-SL-1DL-120, PRO-SL-MF-150 | 11d |
|  | 3 | **Distribution Panel Board** |  | 2026-10-15 | 2026-10-21 |  |  |
| PRO-SL-1DL-160 |  | 1ST Material Delivery for Distrubution Panel Boards of Street Lighting Network | 6d | 2026-10-15 | 2026-10-21 | PRO-SL-MF-160, PRO-SL-1DL-140 | 14d |
|  | 5 | **Termination and Testing Works** |  | 2026-10-22 | 2026-11-22 |  |  |
| PRO-SL-1DL-130 |  | 1ST Material Delivery for Fuse Boxes of Street Lighting Network | 6d | 2026-10-22 | 2026-10-28 | PRO-SL-MF-130, PRO-SL-1DL-160 | 29d |
| PRO-SL-1DL-170 |  | 1ST Material Delivery for Cable Lugs of Street Lighting Network | 6d | 2026-11-16 | 2026-11-22 | PRO-SL-MF-170, PRO-SL-1DL-130, PRO-RD-MF-160 | 28d |
|  | 4 | **Earthing System Works** |  | 2026-11-23 | 2026-11-29 |  |  |
| PRO-SL-1DL-150 |  | 1ST Material Delivery for Lighting Earthing of Street Lighting Network | 6d | 2026-11-23 | 2026-11-29 | PRO-SL-MF-150 SS, PRO-SL-1DL-170, PRO-SL-MF-150 FF | 28d |
|  | DL | **Material Delivery & Site Inspection** |  | 2026-08-23 | 2026-12-16 |  |  |
|  | 1 | **Cabling Works** |  | 2026-08-23 | 2026-09-15 |  |  |
| PRO-R25-SL-DL-100 |  | Material Delivery & Site Inspection of Lighting Cables for Street Lighting Network | 21d | 2026-08-23 | 2026-09-15 | PRO-SL-1DL-100, PRO-CTV-PO-100 | 23d |
|  | 2 | **Lighting Poles Works** |  | 2026-09-09 | 2026-10-28 |  |  |
| PRO-R25-SL-DL-110 |  | Material Delivery & Site Inspection of Lighting Poles Foundations for Street Lighting Network | 21d | 2026-09-09 | 2026-10-04 | PRO-SL-1DL-110 SS, PRO-R25-SL-DL-100 SS | 8d |
| PRO-R25-SL-DL-120 |  | Material Delivery & Site Inspection of Lighting Poles for Street Lighting Network | 21d | 2026-10-05 | 2026-10-28 | PRO-SL-1DL-120, PRO-R25-SL-DL-110 | 8d |
| PRO-R25-SL-DL-140 |  | Material Delivery & Site Inspection of Lighting Fixtures for Street Lighting Network | 21d | 2026-10-05 | 2026-10-28 | PRO-SL-1DL-140, PRO-R25-SL-DL-120 SS | 8d |
|  | 3 | **Distribution Panel Board** |  | 2026-10-29 | 2026-11-22 |  |  |
| PRO-R25-SL-DL-160 |  | Material Delivery & Site Inspection of Distrubution Panel Boards for Street Lighting Network | 21d | 2026-10-29 | 2026-11-22 | PRO-SL-1DL-160, PRO-R25-SL-DL-140, PRO-R25-IR-DL-150 | 8d |
|  | 4 | **Termination and Testing Works** |  | 2026-11-23 | 2026-12-16 |  |  |
| PRO-R25-SL-DL-130 |  | Material Delivery & Site Inspection of Fuse Boxes for Street Lighting Network | 21d | 2026-11-23 | 2026-12-16 | PRO-SL-1DL-130, PRO-R25-SL-DL-160 | 8d |
| PRO-R25-SL-DL-170 |  | Material Delivery & Site Inspection of Cable Lugs for Street Lighting Network | 21d | 2026-11-23 | 2026-12-16 | PRO-SL-1DL-170 SS, PRO-R25-SL-DL-130 SS | 28d |
|  | 5 | **Earthing System Works** |  | 2026-11-23 | 2026-12-16 |  |  |
| PRO-R25-SL-DL-150 |  | Material Delivery & Site Inspection of Lighting Earthing for Street Lighting Network | 21d | 2026-11-23 | 2026-12-16 | PRO-SL-1DL-150 SS, PRO-R25-SL-DL-170 SS, PRO-SL-1DL-150 FF | 28d |
|  | TE | **Telecom and Light Current Network** |  | 2026-07-30 | 2026-11-16 |  |  |
|  | PO | **Issuance of Purchase Orders** |  | 2026-07-30 | 2026-08-22 |  |  |
|  | 1 | **Ducts Works** |  | 2026-07-30 | 2026-08-06 |  |  |
| PRO-TE-PO-100 |  | Issuance of Purchase Order for Ducts forTelecom Network | 7d | 2026-07-30 | 2026-08-06 | ENG-MT-TE-A-100, ENG-SH-TE-A-110, ENG-MS-TE-A-110, PRO-SL-PO-170 | 23d |
|  | 3 | **Manholes Works** |  | 2026-07-30 | 2026-08-06 |  |  |
| PRO-TE-PO-110 |  | Issuance of Purchase Order for Manholes forTelecom Network | 7d | 2026-07-30 | 2026-08-06 | ENG-MT-TE-A-110, ENG-SH-TE-A-110, PRO-TE-PO-100 SS | 23d |
|  | 2 | **CCTV, Telephone, MSN, ACs System Works** |  | 2026-07-30 | 2026-08-22 |  |  |
| PRO-CTV-PO-100 |  | Issuance of Purchase Order for Civil and Finishes Works of CCTV Complete System | 20d | 2026-07-30 | 2026-08-22 | ENG-MT-CTV-A-100, ENG-SH-MSN-A-120, ENG-SH-CTV-A-110, PRO-TE-PO-110 SS, ENG-MS-CTV-A-110 | 23d |

| ID | WBS | Task | Duration | Start | Finish | Predecessors | Total float |
| --- | --- | --- | --- | --- | --- | --- | --- |
|  | MF | **Manufacturing of Material** |  | 2026-08-08 | 2026-10-28 |  |  |
|  | 1 | **Ducts Works** |  | 2026-08-08 | 2026-08-30 |  |  |
| PRO-TE-MF-100 |  | Manufacturing of Ducts for Telecom Network | 20d | 2026-08-08 | 2026-08-30 | PRO-TE-PO-100 | 31d |
|  | 3 | **Manholes Works** |  | 2026-08-31 | 2026-09-22 |  |  |
| PRO-TE-MF-110 |  | Manufacturing of Manholes for Telecom Network | 20d | 2026-08-31 | 2026-09-22 | PRO-TE-PO-110, PRO-TE-MF-100 | 31d |
|  | 2 | **CCTV, Telephone, MSN, ACs System Works** |  | 2026-09-24 | 2026-10-28 |  |  |
| PRO-CTV-MF-100 |  | Manufacturing of Civil and Finishes Works for CCTV Complete System | 30d | 2026-09-24 | 2026-10-28 | PRO-CTV-PO-100, PRO-TE-MF-110 | 46d |
|  | 1DL | **1st Material Delivery & Site Inspection** |  | 2026-08-31 | 2026-11-04 |  |  |
|  | 1 | **Ducts Works** |  | 2026-08-31 | 2026-09-06 |  |  |
| PRO-TE-1DL-100 |  | 1ST Material Delivery for Ducts of Telecom Network | 6d | 2026-08-31 | 2026-09-06 | PRO-TE-MF-100 | 39d |
|  | 3 | **Manholes Works** |  | 2026-09-24 | 2026-09-30 |  |  |
| PRO-TE-1DL-110 |  | 1ST Material Delivery for Manholes of Telecom Network | 6d | 2026-09-24 | 2026-09-30 | PRO-TE-MF-110, PRO-TE-1DL-100 | 31d |
|  | 2 | **CCTV, Telephone, MSN, ACs System Works** |  | 2026-10-29 | 2026-11-04 |  |  |
| PRO-CTV-1DL-100 |  | 1ST Material Delivery for Civil and Finishes Works of CCTV Complete System | 6d | 2026-10-29 | 2026-11-04 | PRO-CTV-MF-100, PRO-TE-1DL-110 | 46d |
|  | DL | **Material Delivery & Site Inspection** |  | 2026-09-07 | 2026-11-16 |  |  |
|  | 1 | **Ducts Works** |  | 2026-09-07 | 2026-09-24 |  |  |
| PRO-R25-TE-DL-100 |  | Material Delivery & Site Inspection for Ducts of Telecom Network | 15d | 2026-09-07 | 2026-09-24 | PRO-TE-1DL-100 | 39d |
|  | 3 | **Manholes Works** |  | 2026-10-01 | 2026-10-18 |  |  |
| PRO-R25-TE-DL-110 |  | Material Delivery & Site Inspection of Manholes for Telecom Network | 15d | 2026-10-01 | 2026-10-18 | PRO-R25-TE-DL-100, PRO-TE-1DL-110 | 34d |
|  | 2 | **CCTV, Telephone, MSN, ACs System Works** |  | 2026-11-05 | 2026-11-16 |  |  |
| PRO-R25-CTV-DL-100 |  | Material Delivery & Site Inspection of for Civil and Finishes Works of CCTV Complete System | 10d | 2026-11-05 | 2026-11-16 | PRO-CTV-1DL-100, PRO-R25-TE-DL-110 | 46d |
|  | RD | **Road Works** |  | 2026-06-23 | 2026-12-26 |  |  |
|  | PO | **Issuance of Purchase Orders** |  | 2026-06-23 | 2026-08-10 |  |  |
|  | 1 | **Road Works** |  | 2026-06-23 | 2026-08-10 |  |  |
| PRO-RD-PO-100 |  | Issuance of Purchase Order for Subgrade of Road Works | 7d | 2026-06-23 | 2026-06-30 | ENG-MT-RD-A-100, ENG-SH-RD-A-100, ENG-SH-RD-A-110, ENG-MS-RD-A-30, ENG-MS-RD-A-40, ENG-MS-RD-A-10, ENG-MS-RD-A-20 | 19d |
| PRO-RD-PO-110 |  | Issuance of Purchase Order for Aggregate Base Course of Road Works | 7d | 2026-07-01 | 2026-07-08 | ENG-MT-RD-A-110, ENG-SH-RD-A-100, ENG-SH-RD-A-110, PRO-RD-PO-100, ENG-MS-MRK-A-10, ENG-MS-TSB-A-10 | 22d |
| PRO-RD-PO-120 |  | Issuance of Purchase Order for Prime Coat of Road Works | 7d | 2026-07-09 | 2026-07-16 | ENG-MT-RD-A-120, ENG-SH-RD-A-100, ENG-SH-RD-A-110, PRO-RD-PO-110 | 25d |
| PRO-RD-PO-130 |  | Issuance of Purchase Order for Asphaltic Base Course Layer of Road Works | 7d | 2026-07-18 | 2026-07-25 | ENG-MT-RD-A-130, ENG-SH-RD-A-100, ENG-SH-RD-A-110, PRO-RD-PO-120 | 25d |
| PRO-RD-PO-180 |  | Issuance of Purchase Order for Asphaltic Wearing Course Layer for Roads Network | 7d | 2026-07-26 | 2026-08-02 | ENG-MT-RD-A-160, ENG-SH-RD-A-100, ENG-SH-RD-A-110, PRO-RD-PO-130 | 25d |
| PRO-RD-PO-190 |  | Issuance of Purchase Order for Tack Coat Layer for Roads Network | 7d | 2026-08-03 | 2026-08-10 | ENG-MT-RD-A-170, ENG-SH-RD-A-100, ENG-SH-RD-A-110, PRO-RD-PO-180 | 25d |
|  | 2 | **Pavement Works** |  | 2026-07-09 | 2026-07-25 |  |  |
| PRO-RD-PO-140 |  | Issuance of Purchase Order for Interlock Tiles of Landscaping | 7d | 2026-07-09 | 2026-07-16 | ENG-MT-RD-A-140, ENG-SH-HS-A-110, ENG-MS-HS-A-10, PRO-RD-PO-120 SS | 37d |
| PRO-RD-PO-150 |  | Issuance of Purchase Order for Curbstones of Landscaping | 7d | 2026-07-18 | 2026-07-25 | ENG-MT-RD-A-150, ENG-SH-HS-A-110, PRO-RD-PO-140 | 37d |
|  | 3 | **Traffic Signs Boards and Roads Marking** |  | 2026-07-26 | 2026-08-10 |  |  |
| PRO-RD-PO-160 |  | Issuance of Purchase Order for Traffic Signs Boards of Road Works | 7d | 2026-07-26 | 2026-08-02 | ENG-MT-TS-A-100, ENG-SH-TSB-A-100, PRO-RD-PO-150, ENG-MS-TSB-A-10 | 37d |
| PRO-RD-PO-170 |  | Issuance of Purchase Order for Road Markings of Road Works | 7d | 2026-08-03 | 2026-08-10 | ENG-MT-TS-A-110, ENG-SH-MRK-A-110, PRO-RD-PO-160, ENG-MS-MRK-A-10 | 44d |
|  | MF | **Manufacturing of Material** |  | 2026-07-01 | 2026-11-12 |  |  |
|  | 1 | **Road Works** |  | 2026-07-01 | 2026-10-14 |  |  |
| PRO-RD-MF-100 |  | Manufacturing of Subgrade for Road Works | 10d | 2026-07-01 | 2026-07-12 | PRO-RD-PO-100 | 19d |
| PRO-RD-MF-110 |  | Manufacturing of Aggregate Base Course for Road Works | 20d | 2026-07-13 | 2026-08-04 | PRO-RD-PO-110, PRO-RD-MF-100 | 19d |
| PRO-RD-MF-120 |  | Manufacturing of Prime Coat for Road Works | 20d | 2026-08-05 | 2026-08-27 | PRO-RD-PO-120, PRO-RD-MF-110 | 19d |
| PRO-RD-MF-190 |  | Manufacturing of Tack Coat Layer for Roads Network | 50d | 2026-08-11 | 2026-10-08 | PRO-RD-PO-190 | 25d |
| PRO-RD-MF-130 |  | Manufacturing of Asphaltic Base Course Layer for Road Works | 20d | 2026-08-29 | 2026-09-20 | PRO-RD-PO-130, PRO-RD-MF-120 | 19d |
| PRO-RD-MF-180 |  | Manufacturing of Asphaltic Wearing Course Layer for Roads Network | 20d | 2026-09-21 | 2026-10-14 | PRO-RD-PO-180, PRO-RD-MF-130 | 19d |
|  | 2 | **Pavement Works** |  | 2026-10-10 | 2026-11-02 |  |  |
| PRO-RD-MF-140 |  | Manufacturing of Interlock Tiles for Landscaping | 21d | 2026-10-10 | 2026-11-02 | PRO-RD-PO-140, PRO-RD-MF-190 | 25d |
| PRO-RD-MF-150 |  | Manufacturing of Curbstones for Landscaping | 20d | 2026-10-10 | 2026-11-01 | PRO-RD-PO-150, PRO-RD-MF-140 SS | 37d |
|  | 3 | **Traffic Signs Boards and Roads Marking** |  | 2026-08-03 | 2026-11-12 |  |  |
| PRO-RD-MF-160 |  | Manufacturing of Traffic Signs Boards for Road Works | 80d | 2026-08-03 | 2026-11-04 | PRO-RD-PO-160 | 37d |
| PRO-RD-MF-170 |  | Manufacturing of Road Markings for Road Works | 80d | 2026-08-11 | 2026-11-12 | PRO-RD-PO-170 | 44d |
|  | 1DL | **1st Material Delivery & Site Inspection** |  | 2026-07-13 | 2026-12-05 |  |  |
|  | 1 | **Road Works** |  | 2026-07-13 | 2026-10-31 |  |  |
| PRO-RD-1DL-100 |  | 1ST Material Delivery for Subgrade of Road Works | 7d | 2026-07-13 | 2026-07-20 | PRO-RD-MF-100 | 35d |
| PRO-RD-1DL-110 |  | 1ST Material Delivery for Aggregate Base Course of Road Works | 7d | 2026-08-05 | 2026-08-12 | PRO-RD-MF-110, PRO-RD-1DL-100 | 36d |
| PRO-RD-1DL-120 |  | 1ST Material Delivery for Prime Coat of Road Works | 15d | 2026-08-29 | 2026-09-14 | PRO-RD-MF-120, PRO-RD-1DL-110 | 29d |
| PRO-RD-1DL-130 |  | 1ST Material Delivery for Asphaltic Base Course Layer of Road Works | 7d | 2026-09-21 | 2026-09-29 | PRO-RD-MF-130, PRO-RD-1DL-120 | 28d |
| PRO-RD-1DL-180 |  | 1ST Material Delivery for Asphaltic Wearing Course Layer for Roads Network | 7d | 2026-10-15 | 2026-10-22 | PRO-RD-MF-180, PRO-RD-1DL-130 | 19d |
| PRO-RD-1DL-190 |  | 1ST Material Delivery for Tack Coat Layer for Roads Network | 7d | 2026-10-24 | 2026-10-31 | PRO-RD-MF-190, PRO-RD-1DL-180 | 23d |
|  | 2 | **Pavement Works** |  | 2026-11-03 | 2026-11-18 |  |  |
| PRO-RD-1DL-140 |  | 1ST Material Delivery for Interlock Tiles of Landscaping | 7d | 2026-11-03 | 2026-11-10 | PRO-RD-MF-140, PRO-RD-1DL-190 | 25d |
| PRO-RD-1DL-150 |  | 1ST Material Delivery for Curbstones of Landscaping | 7d | 2026-11-11 | 2026-11-18 | PRO-RD-MF-150, PRO-RD-1DL-140 | 29d |
|  | 3 | **Traffic Signs Boards and Roads Marking** |  | 2026-11-19 | 2026-12-05 |  |  |
| PRO-RD-1DL-170 |  | 1ST Material Delivery for Road Markings of Road Works | 7d | 2026-11-19 | 2026-11-26 | PRO-RD-MF-170, PRO-RD-1DL-150 | 39d |
| PRO-RD-1DL-160 |  | 1ST Material Delivery for Traffic Signs Boards of Road Works | 7d | 2026-11-28 | 2026-12-05 | PRO-RD-MF-160, PRO-RD-1DL-170 | 39d |
|  | DL | **Material Delivery & Site Inspection** |  | 2026-07-21 | 2026-12-26 |  |  |
|  | 1 | **Pre-Bituminous Construction** |  | 2026-07-21 | 2026-09-07 |  |  |
| PRO-R25-RD-DL-100 |  | Material Delivery & Site Inspection for Subgrade of Road Works | 21d | 2026-07-21 | 2026-08-13 | PRO-RD-1DL-100 | 35d |
| PRO-R25-RD-DL-110 |  | Material Delivery & Site Inspection for Aggregate Base Course of Road Works | 21d | 2026-08-15 | 2026-09-07 | PRO-RD-1DL-110, PRO-R25-RD-DL-100 | 35d |
|  | 4 | **Bituminous Construction** |  | 2026-09-15 | 2026-11-17 |  |  |
| PRO-R25-RD-DL-160 |  | Material Delivery & Site Inspection for Prime Coat Layer of Road Works | 11d | 2026-09-15 | 2026-09-28 | PRO-RD-1DL-120, PRO-R25-RD-DL-110 | 29d |

| ID | WBS | Task | Duration | Start | Finish | Predecessors | Total float |
| --- | --- | --- | --- | --- | --- | --- | --- |
| PRO-R25-RD-DL-170 |  | Material Delivery & Site Inspection for Asphaltic Base Course Layer of Road Works | 11d | 2026-09-30 | 2026-10-12 | PRO-RD-1DL-130, PRO-R25-RD-DL-160 | 28d |
| PRO-RD-DL-200 |  | Material Delivery for Asphaltic Wearing Course Layer for Roads Network | 11d | 2026-10-24 | 2026-11-04 | PRO-RD-1DL-180, PRO-R25-RD-DL-170 | 19d |
| PRO-RD-DL-210 |  | Material Delivery for Tack Coat Layer for Roads Network | 11d | 2026-11-05 | 2026-11-17 | PRO-RD-1DL-190, PRO-RD-DL-200 | 19d |
|  | 2 | **Pavement Works** |  | 2026-11-18 | 2026-12-13 |  |  |
| PRO-R25-RD-DL-120 |  | Material Delivery & Site Inspection of Interlock Tiles for Landscaping | 11d | 2026-11-18 | 2026-11-30 | PRO-RD-1DL-140, PRO-RD-DL-210 | 19d |
| PRO-R25-RD-DL-130 |  | Material Delivery & Site Inspection of Curbstones for Landscaping | 11d | 2026-12-01 | 2026-12-13 | PRO-RD-1DL-150, PRO-R25-RD-DL-120 | 19d |
|  | 3 | **Traffic Signs Boards and Roads Marking** |  | 2026-12-01 | 2026-12-26 |  |  |
| PRO-R25-RD-DL-150 |  | Material Delivery & Site Inspection of Road Markings For Road Works | 11d | 2026-12-01 | 2026-12-13 | PRO-RD-1DL-170 SS, PRO-R25-RD-DL-130 SS, PRO-LV-TT-DL-100 | 32d |
| PRO-R25-RD-DL-140 |  | Material Delivery & Site Inspection of Traffic Signs Boards For Road Works | 11d | 2026-12-14 | 2026-12-26 | PRO-RD-1DL-160, PRO-R25-RD-DL-150 | 32d |
|  | 1 | **Superstructure Works** |  | 2026-06-23 | 2026-08-23 |  |  |
|  | 1 | **Issuance of Purchase Orders** |  | 2026-06-23 | 2026-07-05 |  |  |
|  | SL1 | **Water Pump Station** |  | 2026-06-23 | 2026-06-27 |  |  |
| PRO-LS-CV-PO-20 |  | Issuance of Purchase Order for Works for Water Pump Station | 4d | 2026-06-23 | 2026-06-27 | ENG-MT-SLS-CV-A-110, ENG-SH-LS-A-170, ENG-MS-LS-A-180 | 0d |
|  | SL11 | **Storage Tank (TSE)** |  | 2026-06-28 | 2026-07-05 |  |  |
| PRO-TSE-CV-PO-30 |  | Issuance of Purchase Order for Works for Storage Tank (TSE) | 7d | 2026-06-28 | 2026-07-05 | ENG-MT-TSE-CV-A-140, ENG-SH-ST-A-180, PRO-LS-CV-PO-20, ENG-MS-ST-A-190 | 1d |
|  | SL111 | **Control Room** |  | 2026-06-28 | 2026-07-05 |  |  |
| PRO-TSE-CV-PO-40 |  | Issuance of Purchase Order for Works for Control Room | 7d | 2026-06-28 | 2026-07-05 | ENG-SH-ST-A-190, ENG-MT-TSE-CV-A-150, PRO-TSE-CV-PO-30 SS, ENG-MS-ST-A-200 | 1d |
|  | SL | **Sewage Pump Stations** |  | 2026-06-28 | 2026-07-05 |  |  |
| PRO-SPS-CV-PO-10 |  | Issuance of Purchase Order for Works of Sewage Pump Station | 7d | 2026-06-28 | 2026-07-05 | ENG-MT-PS-CV-A-150, ENG-SH-SPS-A-160, PRO-TSE-CV-PO-40 SS, ENG-MS-SPS-A-170 | 1d |
|  | SL12 | **Gaurd Room** |  | 2026-06-28 | 2026-07-05 |  |  |
| PRO-GR-CV-PO-40 |  | Issuance of Purchase Order for Materials for Gaurd Room | 7d | 2026-06-28 | 2026-07-05 | ENG-MT-GR-CV-A-130, ENG-SH-GR-A-190, PRO-SPS-CV-PO-10 SS, ENG-MS-GR-A-210 | 1d |
|  | SL121 | **Boundary Fence** |  | 2026-06-28 | 2026-07-05 |  |  |
| PRO-FE-CV-PO-50 |  | Issuance of Purchase Order for Materials for Boundary Fence | 7d | 2026-06-28 | 2026-07-05 | ENG-MT-FE-CV-A-120, ENG-SH-GR-A-200, PRO-GR-CV-PO-40 SS, ENG-MS-GR-A-220 | 1d |
|  | 2 | **Manufacturing of Material** |  | 2026-06-28 | 2026-07-29 |  |  |
|  | SL1 | **Water Pump Station** |  | 2026-06-28 | 2026-07-05 |  |  |
| PRO-LS-CV-MF-30 |  | Manufacturing of Works for Works for Water Pump Station | 7d | 2026-06-28 | 2026-07-05 | PRO-LS-CV-PO-20 | 0d |
|  | SL11 | **Storage Tank (TSE)** |  | 2026-07-06 | 2026-07-21 |  |  |
| PRO-TSE-CV-MF-40 |  | Manufacturing of Works for Storage Tank (TSE) | 14d | 2026-07-06 | 2026-07-21 | PRO-TSE-CV-PO-30, PRO-LS-CV-MF-30 | 1d |
|  | SL111 | **Control Room** |  | 2026-07-06 | 2026-07-29 |  |  |
| PRO-TSE-CV-MF-50 |  | Manufacturing of Works for Control Room | 21d | 2026-07-06 | 2026-07-29 | PRO-TSE-CV-PO-40, PRO-TSE-CV-MF-40 SS | 1d |
|  | SL | **Sewage Pump Stations** |  | 2026-07-06 | 2026-07-29 |  |  |
| PRO-SPS-CV-MF-10 |  | Manufacturing of Works of Sewage Pump Station | 21d | 2026-07-06 | 2026-07-29 | PRO-SPS-CV-PO-10, PRO-TSE-CV-MF-50 SS | 1d |
|  | SL12 | **Gaurd Room** |  | 2026-07-06 | 2026-07-29 |  |  |
| PRO-GR-CV-MF-50 |  | Manufacturing of Materials for Gaurd Room | 21d | 2026-07-06 | 2026-07-29 | PRO-GR-CV-PO-40, PRO-SPS-CV-MF-10 SS | 1d |
|  | SL121 | **Boundary Fence** |  | 2026-07-06 | 2026-07-29 |  |  |
| PRO-FE-CV-MF-60 |  | Manufacturing of Materials for Boundary Fence | 21d | 2026-07-06 | 2026-07-29 | PRO-FE-CV-PO-50, PRO-GR-CV-MF-50 SS | 1d |
|  | 3 | **1st Material Delivery & Site Inspection** |  | 2026-06-28 | 2026-08-06 |  |  |
|  | SL1 | **Water Pump Station** |  | 2026-06-28 | 2026-07-04 |  |  |
| PRO-LS-CV-1DL-40 |  | 1ST Material Delivery for Works of Water Pump Station | 6d | 2026-06-28 | 2026-07-04 | PRO-LS-CV-MF-30 SS | 0d |
|  | SL11 | **Storage Tank (TSE)** |  | 2026-07-22 | 2026-07-29 |  |  |
| PRO-TSE-CV-1DL-50 |  | 1ST Material Delivery for Works for Storage Tank (TSE) | 7d | 2026-07-22 | 2026-07-29 | PRO-TSE-CV-MF-40, PRO-LS-CV-1DL-40 | 8d |
|  | SL111 | **Control Room** |  | 2026-07-30 | 2026-08-06 |  |  |
| PRO-TSE-CV-1DL-60 |  | 1ST Material Delivery for Works for Control Room | 7d | 2026-07-30 | 2026-08-06 | PRO-TSE-CV-MF-50, PRO-TSE-CV-1DL-50 SS | 1d |
|  | SL | **Sewage Pump Stations** |  | 2026-07-30 | 2026-08-06 |  |  |
| PRO-SPS-CV-1DL-10 |  | 1ST Material Delivery for Works of Sewage Pump Station | 7d | 2026-07-30 | 2026-08-06 | PRO-SPS-CV-MF-10, PRO-TSE-CV-1DL-60 SS | 1d |
|  | SL12 | **Gaurd Room** |  | 2026-07-30 | 2026-08-06 |  |  |
| PRO-GR-CV-1DL-60 |  | 1ST Material Delivery for Materials for Gaurd Room | 7d | 2026-07-30 | 2026-08-06 | PRO-GR-CV-MF-50, PRO-SPS-CV-1DL-10 SS | 1d |
|  | SL121 | **Boundary Fence** |  | 2026-07-30 | 2026-08-06 |  |  |
| PRO-FE-CV-1DL-70 |  | 1ST Material Delivery for Materials for Boundary Fence | 7d | 2026-07-30 | 2026-08-06 | PRO-FE-CV-MF-60, PRO-GR-CV-1DL-60 SS | 1d |
|  | 4 | **Material Delivery & Site Inspection** |  | 2026-06-28 | 2026-08-23 |  |  |
|  | SL1 | **Water Pump Station** |  | 2026-06-28 | 2026-07-08 |  |  |
| PRO-LS-CV-DL-50 |  | Material Delivery & Site Inspection for Works for Water Pump Station | 10d | 2026-06-28 | 2026-07-08 | PRO-LS-CV-1DL-40 SS | 0d |
|  | SL11 | **Storage Tank (TSE)** |  | 2026-07-09 | 2026-08-09 |  |  |
| PRO-TSE-CV-DL-60 |  | Material Delivery & Site Inspection for Works for Storage Tank (TSE) | 27d | 2026-07-09 | 2026-08-09 | PRO-LS-CV-DL-50 | 32d |
|  | SL111 | **Control Room** |  | 2026-08-08 | 2026-08-23 |  |  |
| PRO-TSE-CV-DL-70 |  | Material Delivery & Site Inspection for Works for Control Room | 14d | 2026-08-08 | 2026-08-23 | PRO-TSE-CV-1DL-60, PRO-TSE-CV-DL-60 SS | 7d |
|  | SL | **Sewage Pump Stations** |  | 2026-08-08 | 2026-08-23 |  |  |
| PRO-SPS-CV-DL-10 |  | Material Delivery & Site Inspection for Works for Pump Station | 14d | 2026-08-08 | 2026-08-23 | PRO-SPS-CV-1DL-10, PRO-TSE-CV-DL-70 SS | 17d |
|  | SL12 | **Gaurd Room** |  | 2026-08-08 | 2026-08-23 |  |  |
| PRO-GR-CV-DL-70 |  | Material Delivery & Site Inspection for Materials for Gaurd Room | 14d | 2026-08-08 | 2026-08-23 | PRO-GR-CV-1DL-60, PRO-SPS-CV-DL-10 SS | 17d |
|  | SL121 | **Boundary Fence** |  | 2026-08-08 | 2026-08-23 |  |  |
| PRO-FE-CV-DL-80 |  | Material Delivery & Site Inspection for Materials for Boundary Fence | 14d | 2026-08-08 | 2026-08-23 | PRO-FE-CV-1DL-70, PRO-GR-CV-DL-70 SS | 17d |
|  | IR1 | **Softscape and Planting Works** |  | 2026-07-09 | 2026-10-25 |  |  |
|  | PO | **Issuance of Purchase Orders** |  | 2026-07-09 | 2026-07-22 |  |  |
|  | 1 | **Main Line Pipes** |  | 2026-07-09 | 2026-07-22 |  |  |
| PRO-IR-PO-140 |  | Issuance of Purchase Order for Softscape and Planting Works | 6d | 2026-07-09 | 2026-07-15 | ENG-MT-IR-ML-A-140, PRO-LV-DP-PO-100 | 5d |
| PRO-IR-PO-150 |  | Issuance of Purchase Order for Site Furnishings (Seating Bench,Stone Boulders and Gravel) | 6d | 2026-07-16 | 2026-07-22 | ENG-MT-IR-ML-A-150, PRO-IR-PO-140 | 15d |
|  | MF | **Manufacturing of Material** |  | 2026-07-16 | 2026-10-01 |  |  |
|  | 1 | **Main Line Pipes** |  | 2026-07-16 | 2026-10-01 |  |  |
| PRO-IR-MF-140 |  | Manufacturing of Softscape and Planting Works | 60d | 2026-07-16 | 2026-09-24 | PRO-IR-PO-140 | 5d |

| ID | WBS | Task | Duration | Start | Finish | Predecessors | Complete | Total float |
| --- | --- | --- | --- | --- | --- | --- | --- | --- |
| PRO-IR-MF-150 |  | Manufacturing of Valves for Site Furnishings (Seating Bench,Stone Boulders and Gravel) | 60d | 2026-07-23 | 2026-10-01 | PRO-IR-PO-150 |  | 15d |
|  | 1DL | **1st Material Delivery & Site Inspection** |  | 2026-09-26 | 2026-10-08 |  |  |  |
|  | 1 | **Main Line Pipes** |  | 2026-09-26 | 2026-10-08 |  |  |  |
| PRO-IR-1DL-140 |  | 1ST Material Delivery for Softscape and Planting Works | 6d | 2026-09-26 | 2026-10-01 | PRO-IR-MF-140 |  | 5d |
| PRO-IR-1DL-150 |  | 1ST Material Delivery for Site Furnishings (Seating Bench,Stone Boulders and Gravel) | 6d | 2026-10-03 | 2026-10-08 | PRO-IR-MF-150, PRO-IR-1DL-140 |  | 15d |
|  | DL | **Material Delivery & Site Inspection** |  | 2026-10-03 | 2026-10-25 |  |  |  |
|  | 1 | **Main Line Pipes** |  | 2026-10-03 | 2026-10-25 |  |  |  |
| PRO-R25-IR-DL-140 |  | Material Delivery & Site Inspection of Softscape and Planting Works | 10d | 2026-10-03 | 2026-10-13 | PRO-IR-1DL-140, PRO-R25-SD-DL-140 |  | 5d |
| PRO-R25-IR-DL-150 |  | Material Delivery & Site Inspection of Site Furnishings (Seating Bench,Stone Boulders and Gravel) | 10d | 2026-10-14 | 2026-10-25 | PRO-IR-1DL-150, PRO-R25-IR-DL-140 |  | 11d |
|  | LL | **Long Lead Time Items** |  | 2026-07-09 | 2027-02-07 |  |  |  |
|  | 1 | **Superstructure Works** |  | 2026-07-09 | 2027-02-07 |  |  |  |
|  | SL | **Sewage Pump Station** |  | 2026-07-09 | 2026-12-30 |  |  |  |
|  | 1 | **Issuance of Purchase Orders** |  | 2026-07-09 | 2026-07-15 |  |  |  |
| PRO-SPS-LL-PO-10 |  | Issuance of Purchase Order for Electromechanical Works for Pump Station | 6d | 2026-07-09 | 2026-07-15 | ENG-MT-SPS-MC-A-110, PRO-LV-DP-PO-100, PRO-LV-DP-PO-110 SS |  | 0d |
|  | 2 | **Manufacturing of Material** |  | 2026-07-16 | 2026-11-10 |  |  |  |
| PRO-SPS-LL-MF-10 |  | Manufacturing of Electromechanical Works for Pump Station | 100d | 2026-07-16 | 2026-11-10 | PRO-SPS-LL-PO-10 |  | 0d |
|  | 3 | **Material Shipping/Custom Clearance/Delivery** |  | 2026-11-11 | 2026-12-05 |  |  |  |
| PRO-SPS-LL-SH/DL-10 |  | Material Delivery for Electromechanical Works for Pump Station | 21d | 2026-11-11 | 2026-12-05 | PRO-SPS-LL-MF-10 |  | 0d |
|  | 4 | **Material Site Inspection** |  | 2026-12-06 | 2026-12-30 |  |  |  |
| PRO-SPS-LL-MSI-10 |  | Material Site Inspection for Electromechanical Works for Pump Station | 22d | 2026-12-06 | 2026-12-30 | PRO-SPS-LL-SH/DL-10 |  | 0d |
|  | SL1 | **Water Pump Station** |  | 2026-07-16 | 2026-12-02 |  |  |  |
|  | 1 | **Issuance of Purchase Orders** |  | 2026-07-16 | 2026-07-23 |  |  |  |
| PRO-LS-LL-PO-20 |  | Issuance of Purchase Order for Electromechanical Works for Water Pump Station | 7d | 2026-07-16 | 2026-07-23 | ENG-MT-SPS-MC-A-110, PRO-LS-CV-PO-20, PRO-SPS-LL-PO-10 |  | 6d |
|  | 2 | **Manufacturing of Material** |  | 2026-07-25 | 2026-10-14 |  |  |  |
| PRO-LS-LL-MF-20 |  | Manufacturing of Electromechanical Works for Water Pump Station | 70d | 2026-07-25 | 2026-10-14 | PRO-LS-LL-PO-20 |  | 24d |
|  | 3 | **Material Shipping/Custom Clearance/Delivery** |  | 2026-10-15 | 2026-11-08 |  |  |  |
| PRO-LS-LL-SH/DL-20 |  | Material Delivery for Electromechanical Works for Water Pump Station | 21d | 2026-10-15 | 2026-11-08 | PRO-LS-LL-MF-20 |  | 24d |
|  | 4 | **Material Site Inspection** |  | 2026-11-09 | 2026-12-02 |  |  |  |
| PRO-LS-LL-MSI-20 |  | Material Site Inspection for Electromechanical Works for Water Pump Station | 21d | 2026-11-09 | 2026-12-02 | PRO-LS-LL-SH/DL-20 |  | 24d |
|  | SL2 | **Storage Tank (TSE)** |  | 2026-07-25 | 2027-02-07 |  |  |  |
|  | 1 | **Issuance of Purchase Orders** |  | 2026-07-25 | 2026-08-01 |  |  |  |
| PRO-TSE-LL-PO-30 |  | Issuance of Purchase Order for Electromechanical Works for Storage Tank (TSE) | 7d | 2026-07-25 | 2026-08-01 | ENG-MT-TSE-MC-A-120, PRO-TSE-CV-PO-30, PRO-LS-LL-PO-20 |  | 6d |
|  | 2 | **Manufacturing of Material** |  | 2026-08-02 | 2026-12-20 |  |  |  |
| PRO-TSE-LL-MF-30 |  | Manufacturing of Electromechanical Works for Storage Tank (TSE) | 120d | 2026-08-02 | 2026-12-20 | PRO-TSE-LL-PO-30 |  | 6d |
|  | 3 | **Material Shipping/Custom Clearance/Delivery** |  | 2026-12-21 | 2027-01-13 |  |  |  |
| PRO-TSE-LL-SH/DL-30 |  | Material Delivery for Electromechanical Works for Storage Tank (TSE) | 21d | 2026-12-21 | 2027-01-13 | PRO-TSE-LL-MF-30 |  | 6d |
|  | 4 | **Material Site Inspection** |  | 2027-01-14 | 2027-02-07 |  |  |  |
| PRO-TSE-LL-MSI-30 |  | Material Site Inspection for Electromechanical Works for Storage Tank (TSE) | 21d | 2027-01-14 | 2027-02-07 | PRO-TSE-LL-SH/DL-30 |  | 6d |
|  | CON | **Construction Works** |  | 2026-03-10 | 2027-02-28 |  |  |  |
|  | INF | **Infrastructure Networks** |  | 2026-03-10 | 2027-02-10 |  |  |  |
|  | IN | **Internal** |  | 2026-03-10 | 2027-02-10 |  |  |  |
|  | 1 | **Alignment-RD-01** |  | 2026-03-10 | 2027-01-20 |  |  |  |
|  | EW | **Earthworks** |  | 2026-03-10 | 2026-09-16 |  |  |  |
|  | EW | **Earthworks** |  | 2026-03-10 | 2026-09-16 |  |  |  |
| CO-EW-210 |  | Excavation and Backfilling Works Upto Design Level for Earthworks for Alignment-RD-01(Completed) | 81d | 2026-03-10 A | 2026-06-22 A | MS-CS-PS SS, MOB-30 SS, MOB-20 SS, MOB-80 SS, MOB-40 SS, MOB-50 SS, MOB-60 SS, MOB-10 SS, MOB-70 SS, PRE-CON-MDC-10 SS, PRE-CON-MDC-20 SS, PRE-CON-MDC-30 SS, PRE-CON-MDC-40 SS, PRE-CON-MDC-50 SS, PRE-CON-MDC-60 SS, PRE-CON-MDC-70 SS, PRE-CON-MDC-80 SS, MS-CS-IR SS | 100% |  |
| CO-EW-210_R |  | Excavation and Backfilling Works Upto Design Level for Earthworks for Alignment-RD-01(Remaining) | 20d | 2026-06-28 | 2026-07-20 | MS-CS-PS SS, MOB-30 SS, MOB-20 SS, MOB-80 SS, MOB-40 SS, MOB-50 SS, MOB-60 SS, MOB-10 SS, MOB-70 SS, PRE-CON-MDC-10 SS, PRE-CON-MDC-20 SS, PRE-CON-MDC-30 SS, PRE-CON-MDC-40 SS, PRE-CON-MDC-50 SS, PRE-CON-MDC-60 SS, PRE-CON-MDC-70 SS, PRE-CON-MDC-80 SS, MS-CS-IR SS, CO-EW-210, PRO-SD-PO-110, MS-MM-120 |  | 4d |
| CO-EW-210_R01 |  | Excavation and Backfilling Works Upto Design Level for Earthworks for Alignment-RD-01(Remaining)-part1 | 20d | 2026-08-25 | 2026-09-16 | CO-EW-210_R, CO-SD-ML-220 |  | 37d |
|  | SD | **Storm Drainage Network** |  | 2026-06-23 | 2026-09-02 |  |  |  |
|  | MH | **Manholes** |  | 2026-06-23 | 2026-08-09 |  |  |  |
| CO-SD-MH-230 |  | Trench Excavation and Bedding Works for Manholes of Storm Drainage Network for Alignment-RD-01 | 12d | 2026-06-23 | 2026-07-06 | ENG-MT-SD-ML-A-100, MS-CS-SD SS, ENG-MS-SD-ML-A-110, ENG-MT-SD-ML-A-110, ENG-SH-SD-ML-A-110, MS-MM-130, MS-MM-140, MS-CF-EBL, MS-CF-MOB |  | 7d |
| CO-SD-MH-240 |  | Install RC Footing Works for Manholes of Storm Drainage Network for Alignment-RD-01 | 9d | 2026-07-11 | 2026-07-20 | CO-SD-MH-230, PRO-R25-SD-DL-100 FF, PRO-SD-1DL-100 |  | 4d |
| CO-SD-MH-250 |  | Install RC Wall Rings & Slab Works for Manholes of Storm Drainage Network for Alignment-RD-01 | 7d | 2026-07-21 | 2026-07-28 | CO-SD-MH-240, PRO-SD-1DL-100 |  | 4d |
| CO-SD-MH-260 |  | Backfilling Works for Manholes of Storm Drainage Network for Alignment-RD-01 | 10d | 2026-07-29 | 2026-08-09 | CO-SD-MH-250 |  | 10d |
|  | ML | **Main Line Sections** |  | 2026-07-21 | 2026-08-17 |  |  |  |
| CO-SD-ML-140 |  | Trench Excavation and Bedding Works for Main Lines of Storm Drainage Network for Alignment-RD-01 | 8d | 2026-07-21 | 2026-07-29 | ENG-SH-SD-ML-A-110, ENG-MS-SD-ML-A-110, ENG-MT-SD-ML-A-110, MS-CS-SD SS, MS-MM-130, MS-MM-140, CO-SD-MH-250 SS, CO-SD-MH-230 SS, CO-SD-MH-230 FF |  | 11d |
| CO-SD-ML-150 |  | Pipes Laying Works for Main Lines of Storm Drainage Network for Alignment-RD-01 | 8d | 2026-07-30 | 2026-08-08 | CO-SD-ML-140 SS, PRO-R25-SD-DL-120 SS, PRO-SD-1DL-110, CO-SD-MH-250 |  | 3d |
| CO-SD-ML-160 |  | Trench Backfilling and Compaction Works for Main Lines of Storm Drainage Network for Alignment-RD-01 | 8d | 2026-08-09 | 2026-08-17 | CO-SD-ML-150, CO-SD-MH-260 FF |  | 3d |
|  | CB | **Catch Basin Sections** |  | 2026-08-09 | 2026-09-02 |  |  |  |
| CO-SD-CB-180 |  | Trench Excavation and Bedding Works for Catch Basins of Storm Drainage Network for Alignment-RD-01 | 8d | 2026-08-09 | 2026-08-17 | ENG-MT-SD-CB-A-110, ENG-SH-SD-CB-A-110, ENG-MS-SD-CB-A-110, MS-CS-SD SS, CO-SD-ML-160 SS, MS-MM-130, MS-MM-140 |  | 27d |
| CO-SD-CB-190 |  | Installation and Pipes Laying Connection Works for Catch Basins of Storm Drainage Network for Alignment-RD-01 | 7d | 2026-08-18 | 2026-08-25 | CO-SD-CB-180, PRO-R25-SD-DL-110 FF, PRO-R25-SD-DL-130 FF, PRO-SD-1DL-130, PRO-SD-1DL-120 |  | 27d |
| CO-SD-CB-200 |  | Trench Backfilling and Compaction Works for Catch Basins of Storm Drainage Network for Alignment-RD-01 | 7d | 2026-08-26 | 2026-09-02 | CO-SD-CB-190 |  | 27d |
|  | SW | **Sewage Network** |  | 2026-08-18 | 2026-10-27 |  |  |  |
|  | 1 | **Manholes** |  | 2026-08-18 | 2026-10-27 |  |  |  |
| CO-SW-MH-210 |  | Excavation Works for Main Line Manholes of Sewage Network for Alignment-RD-01 | 12d | 2026-08-18 | 2026-08-31 | ENG-MT-SW-ML-A-100, ENG-SH-SW-ML-A-110, MS-CS-SW SS, MS-MM-130, MS-MM-140, ENG-MS-SW-ML-A-110, CO-SD-MH-260, CO-SD-ML-160 |  | 3d |
| CO-SW-MH-220 |  | Installation RC Footing Works for Main Line Manholes of Sewage Network for Alignment-RD-01 | 12d | 2026-09-01 | 2026-09-14 | CO-SW-MH-210, PRO-SW-1DL-110, PRO-R25-SW-DL-110 |  | 3d |
| CO-SW-MH-230 |  | Install Grp Liner Wall Works for Main Line Manholes of Sewage Network for Alignment-RD-01 | 12d | 2026-09-15 | 2026-09-29 | CO-SW-MH-220 |  | 3d |
| CO-SW-MH-240 |  | Pouring Grp Liner Wall Works for Main Line Manholes of Sewage Network for Alignment-RD-01 | 12d | 2026-09-30 | 2026-10-13 | CO-SW-MH-230 |  | 3d |
| CO-SW-MH-250 |  | Backfilling Works for Main Line Manholes of Sewage Network for Alignment-RD-01 | 12d | 2026-10-14 | 2026-10-27 | CO-SW-MH-240 |  | 3d |
|  | ML | **Main Line Sections** |  | 2026-09-03 | 2026-10-27 |  |  |  |
| CO-SW-ML-140 |  | Trench Excavation and Bedding Works for Main Lines of Sewage Network for Alignment-RD-01 | 8d | 2026-09-03 | 2026-09-12 | ENG-SH-SW-ML-A-110, ENG-MS-SW-ML-A-110, ENG-MT-SW-ML-A-110, MS-CS-SW SS, CO-EW-210_R, MS-MM-130, MS-MM-140, CO-SW-MH-220 SS, CO-SD-CB-200 |  | 27d |

| ID | WBS | Task | Duration | Start | Finish | Predecessors | Total float |
| --- | --- | --- | --- | --- | --- | --- | --- |
| CO-SW-ML-150 |  | Pipes Laying Works for Main Lines of Sewage Network for Alignment-RD-01 | 8d | 2026-09-13 | 2026-09-21 | CO-SW-ML-140, PRO-SW-1DL-100, PRO-R25-SW-DL-100 | 27d |
| CO-SW-ML-160 |  | Trench Backfilling and Compaction Works for Main Lines of Sewage Network for Alignment-RD-01 | 6d | 2026-10-21 | 2026-10-27 | CO-SW-ML-150, CO-SW-MH-250 FF | 3d |
|  | TSE | **Treated Sewage Effluent (Tse)** |  | 2026-08-10 | 2026-09-28 |  |  |
| CO-TSE-ML-200 |  | Trench Excavation and Bedding Works for Main Lines of Treated Sewage Effluent (Tse) for Alignment-RD-01 | 7d | 2026-08-10 | 2026-08-17 | ENG-SH-TSE-ML-A-120 SS, ENG-MS-TSE-ML-A-120 SS, ENG-MT-IR-ML-A-120 SS, MS-CS-TSE SS, CO-EW-210_R, MS-MM-130, MS-MM-140, CO-SD-MH-230, CO-SD-MH-260 | 22d |
| CO-TSE-ML-210 |  | Pipes Laying Works for Main Lines of Treated Sewage Effluent (Tse) for Alignment-RD-01 | 17d | 2026-08-23 | 2026-09-10 | PRO-TSE-1DL-120, PRO-R25-TSE-DL-120, CO-TSE-ML-200 | 18d |
| CO-TSE-ML-230 |  | Trench Backfilling and Compaction Works for Treated Sewage Effluent (Tse) for Alignment-RD-01 | 14d | 2026-09-12 | 2026-09-28 | CO-TSE-ML-210 | 18d |
|  | PW | **Potable Water Network** |  | 2026-08-10 | 2026-09-22 |  |  |
|  | ML | **Main Line Sections** |  | 2026-08-10 | 2026-09-15 |  |  |
| CO-PW-ML-140 |  | Trench Excavation and Bedding Works for Main Lines of Potable Water Network for Alignment-RD-01 | 6d | 2026-08-10 | 2026-08-16 | ENG-SH-PW-ML-A-110, ENG-MS-PW-ML-A-110, ENG-MT-PW-ML-A-100, MS-CS-PW SS, CO-EW-210_R, MS-MM-130, MS-MM-140, CO-TSE-ML-200 SS | 36d |
| CO-PW-ML-150 |  | Pipes Laying and accessories for Main Lines of Potable Water Network for Alignment-RD-01 | 6d | 2026-09-02 | 2026-09-08 | CO-PW-ML-140, PRO-PW-1DL-100 SS | 28d |
| CO-PW-ML-160 |  | Trench Backfilling and Compaction Works for Main Lines of Potable Water Network for Alignment-RD-01 | 6d | 2026-09-09 | 2026-09-15 | CO-PW-ML-150 | 28d |
|  | VC | **Valve Chamber** |  | 2026-08-12 | 2026-09-15 |  |  |
| CO-PW-VC-230 |  | Excavation Works for Main Line Valves and Valve Chambers of Potable Water Network for Alignment-RD-01 | 4d | 2026-08-12 | 2026-08-16 | ENG-MT-PW-ML-A-110, MS-CS-PW SS, CO-PW-ML-140 SS, CO-PW-ML-140 FF, MS-MM-130, MS-MM-140 | 36d |
| CO-PW-VC190 |  | Installation of Valve Chambers of Potable Water Network for Alignment-RD-01 | 4d | 2026-08-17 | 2026-08-20 | CO-PW-VC-230 | 42d |
| CO-PW-VC-240 |  | Installation Works for Valves of Potable Water Network for Alignment-RD-01 | 4d | 2026-08-22 | 2026-08-25 | CO-PW-VC190 | 42d |
| CO-PW-VC-250 |  | Backfilling Works for Main Line Valves and Valve Chambers of Potable Water Network for Alignment-RD-01 | 4d | 2026-09-12 | 2026-09-15 | CO-PW-VC-240, CO-PW-ML-160 FF | 28d |
|  | FH | **Fire Hydrant** |  | 2026-08-17 | 2026-09-22 |  |  |
| CO-PW-FH-170 |  | Excavation Works for Fire Hydrants of Potable Water Network for Alignment-RD-01 | 15d | 2026-08-17 | 2026-09-02 | CO-PW-VC-230, ENG-SH-PW-FH-A-110, ENG-MT-PW-FH-A-100, MS-CS-PW SS, CO-EW-210_R, MS-MM-130, MS-MM-140 | 36d |
| CO-PW-FH-180 |  | Installation Works for Fire Hydrant of Potable Water Network for Alignment-RD-01 | 3d | 2026-09-16 | 2026-09-19 | CO-PW-FH-170, PRO-PW-1DL-120 SS, CO-PW-ML-150 | 25d |
| CO-PW-FH-190 |  | Trench Backfilling and Compaction Works for Fire Hydrants of Potable Water Network for Alignment-RD-01 | 3d | 2026-09-20 | 2026-09-22 | CO-PW-FH-180, CO-PW-VC-250 FF | 32d |
|  | IR | **Irrigation Network** |  | 2026-09-29 | 2026-11-09 |  |  |
|  | ML | **Main Line Pipes** |  | 2026-09-29 | 2026-11-09 |  |  |
| CO-IR-ML-150 |  | Trench Excavation and Bedding Works for Main Lines of Irrigation Network for Alignment-RD-01 | 7d | 2026-09-29 | 2026-10-06 | ENG-SH-IR-ML-A-110, ENG-MS-IR-ML-A-110, ENG-MT-IR-ML-A-100, MS-CS-IR SS, CO-EW-210_R, MS-MM-130, MS-MM-140, CO-PW-ML-160, CO-PW-VC-250, CO-PW-FH-180, CO-TSE-ML-230 | 18d |
| CO-IR-ML-160 |  | Pipes Laying Works for Main Lines of Irrigation Network for Alignment-RD-01 | 8d | 2026-10-07 | 2026-10-15 | CO-IR-ML-150, PRO-IR-1DL-100, CO-PW-ML-150, PRO-R25-IR-DL-100 | 18d |
| CO-IR-ML-170 |  | Installation Works for Main Line Valves of Irrigation Network for Alignment-RD-01 | 7d | 2026-10-17 | 2026-10-24 | CO-IR-ML-160, ENG-MT-IR-ML-A-110, PRO-IR-1DL-110, PRO-R25-IR-DL-110 | 18d |
| CO-IR-ML-190 |  | Installation Works for Bulbblers And Sprinklers and Irrigation Control System of Irrigation Network for Alignment-RD-01 | 10d | 2026-10-25 | 2026-11-04 | CO-IR-ML-170 | 18d |
| CO-IR-ML-180 |  | Trench Backfilling and Compaction Works for Main Lines of Irrigation Network for Alignment-RD-01 | 4d | 2026-11-05 | 2026-11-09 | CO-IR-ML-190 | 18d |
|  | MV | **Medium Voltage Network** |  | 2026-10-28 | 2026-11-17 |  |  |
|  | CW | **Cabling Works** |  | 2026-10-28 | 2026-11-17 |  |  |
| CO-MV-ML-280 |  | Trench Excavation and Bedding Works for Medium Voltage Network for Alignment-RD-01 | 6d | 2026-10-28 | 2026-11-03 | ENG-SH-MV-A-110, ENG-MS-MV-A-110, MS-CS-MV SS, CO-PW-FH-190, CO-SW-ML-160, CO-SD-CB-200, CO-SD-ML-160, CO-SD-MH-260, CO-PW-VC-250, MS-MM-130, MS-MM-140, CO-PW-ML-160 | 3d |
| CO-MV-ML-290 |  | Duct Laying Works for Medium Voltage Network for Alignment-RD-01 | 6d | 2026-11-04 | 2026-11-10 | CO-MV-ML-280, PRO-MV-DL-100, PRO-MV-1DL-100 | 3d |
| CO-MV-ML-300 |  | Trench Backfilling and Compaction Works for Medium Voltage Network for Alignment-RD-01 | 6d | 2026-11-11 | 2026-11-17 | CO-MV-ML-290 | 3d |
|  | LV | **Low Voltage Network** |  | 2026-11-18 | 2026-12-16 |  |  |
|  | MLVC | **Main Low Voltage Cables Works ( Cable 300 MM )** |  | 2026-11-18 | 2026-12-08 |  |  |
| CON-LV-ML-130 |  | Trench Excavation and Bedding Works for Main Cable of Low Voltage Network for Alignment-RD-01 | 6d | 2026-11-18 | 2026-11-24 | CO-SD-CB-200, CO-PW-ML-160, ENG-SH-LV-A-120, ENG-MS-MV-A-120, MS-CS-LV SS, CO-MV-ML-300, CO-SW-ML-160, CO-EW-210_R, MS-MM-130, MS-MM-140, MS-CF-SW | 3d |
| CON-LV-ML-140 |  | Cable Laying Works for Main Cable of Low Voltage Network for Alignment-RD-01 | 6d | 2026-11-25 | 2026-12-01 | CON-LV-ML-130, PRO-LV-ML-1DL-100, PRO-LV-ML-DL-100 | 3d |
| CON-LV-ML-150 |  | Trench Backfilling and Compaction Works for Main Cable of Low Voltage Network for Alignment-RD-01 | 6d | 2026-12-02 | 2026-12-08 | CON-LV-ML-140 | 6d |
|  | SLVC | **Service Low Voltage Cables Works ( Cable 70 MM )** |  | 2026-11-25 | 2026-12-16 |  |  |
| CON-LV-HC-130 |  | Trench Excavation and Bedding Works for Service Cable of Low Voltage Network for Alignment-RD-01 | 6d | 2026-11-25 | 2026-12-01 | CON-LV-ML-130, ENG-MS-MV-A-120, MS-CS-LV SS, CO-EW-210_R, ENG-SH-LV-A-120, MS-MM-130, MS-MM-140, CO-PW-ML-160, CO-PW-VC-250, CO-PW-FH-190, CO-TSE-ML-230, CO-SW-ML-160, CO-SD-CB-200, CO-SD-ML-160, CO-SD-MH-260 | 5d |
| CON-LV-HC-140 |  | Cable Laying Works for Service Cable of Low Voltage Network for Alignment-RD-01 | 7d | 2026-12-02 | 2026-12-09 | CON-LV-HC-130, CON-LV-ML-140, PRO-LV-HC-1DL-100, PRO-LV-HC-DL-100 | 5d |
| CON-LV-HC-150 |  | Trench Backfilling and Compaction Works for Service Cable of Low Voltage Network for Alignment-RD-01 | 6d | 2026-12-10 | 2026-12-16 | CON-LV-HC-140, CON-LV-ML-150 | 5d |
|  | DP | **Distribution Pillars Works** |  | 2026-11-25 | 2026-12-02 |  |  |
| CON-LV-DP-130 |  | Foundation Excavation Works for Distribution Pillars of Low Voltage Network for Alignment-RD-01 | 7d | 2026-11-25 | 2026-12-02 | CON-LV-ML-130, ENG-MS-MV-A-120, MS-CS-LV SS, CO-EW-210_R, MS-MM-130, MS-MM-140 | 15d |
|  | SL | **Street Lighting Network** |  | 2026-11-04 | 2026-11-30 |  |  |
|  | LP | **Lighting Poles Works** |  | 2026-11-04 | 2026-11-25 |  |  |
| CO-SL-LP-350 |  | Installation Works for Lighting Poles Foundation of Street Lighting Network for Alignment-RD-01 | 8d | 2026-11-04 | 2026-11-12 | PRO-R25-SL-DL-110, ENG-SH-SL-A-110, ENG-MS-SL-A-110, ENG-MT-SL-A-100, MS-CS-SL SS, CO-EW-210_R, MS-MM-130, MS-MM-140, CO-MV-ML-280 | 10d |
| CO-SL-LP-360 |  | Installation Works for Lighting Poles of Street Lighting Network for Alignment-RD-01 | 5d | 2026-11-14 | 2026-11-18 | CO-SL-LP-350, ENG-MT-SL-A-110, PRO-R25-SL-DL-120 | 10d |
| CO-SL-LP-380 |  | Backfilling Works for Lighting Poles of Street Lighting Network for Alignment-RD-01 | 6d | 2026-11-19 | 2026-11-25 | CO-SL-LP-360 | 14d |
|  | CW | **Cabling Works** |  | 2026-11-19 | 2026-11-30 |  |  |
| CO-SL-CL-290 |  | Cable Laying Works for Street Lighting Network for Alignment-RD-01 | 5d | 2026-11-19 | 2026-11-24 | PRO-R25-SL-DL-100, ENG-SH-SL-A-110, ENG-MS-SL-A-110, ENG-MT-SL-ML-A-100, PRO-SL-1DL-100, MS-CS-SL SS, MS-MM-130, MS-MM-140, CO-SL-LP-360, CO-MV-ML-300, CO-IR-ML-180, CO-PW-ML-160, CO-PW-FH-190, CO-SW-ML-160, CO-SW-MH-250, CO-SD-CB-200, CO-SD-ML-160, CO-SD-MH-260, CO-EW-210_R | 10d |
| CO-SL-CL-300 |  | Trench Backfilling and Compaction Works for Street Lighting Network for Alignment-RD-01 | 5d | 2026-11-25 | 2026-11-30 | CO-SL-CL-290, CO-SL-LP-380 FF | 10d |
|  | DPB | **Distrubution Panel Boards** |  |  |  |  |  |
|  | TE | **Telecom and Light Current Network** |  | 2026-12-01 | 2026-12-24 |  |  |
|  | PD | **Ducts Works** |  | 2026-12-17 | 2026-12-24 |  |  |
| CO-TE-DW-150 |  | Pipes Laying Works for Ducts of Telecom Network for Alignment-RD-01 | 4d | 2026-12-17 | 2026-12-21 | PRO-R25-TE-DL-100, ENG-SH-TE-A-110, ENG-MS-TE-A-110, ENG-MT-TE-A-100, PRO-TE-1DL-100, MS-CS-TE SS, MS-MM-130, MS-MM-140, CO-SD-MH-260, CO-SD-ML-160, CO-SD-CB-200, CO-SW-ML-160, CO-PW-ML-160, CO-PW-VC-250, CO-PW-FH-190, CO-IR-ML-180, CO-MV-ML-300, CON-LV-ML-150, CON-LV-HC-150, CO-SL-LP-380, CO-SL-CL-300, CO-EW-210_R, PRO-LV-DP-1DL-100, PRO-LV-DP-DL-100, CON-LV-DP-130, PRO-R25-SL-DL-160 SS, ENG-MT-SL-DB-A-100, MS-CS-SL SS | 5d |
| CO-TE-DW-160 |  | Trench Backfilling and Compaction Works for Ducts of Telecom Network for Alignment-RD-01 | 3d | 2026-12-22 | 2026-12-24 | CO-TE-MH-190 SS, CO-TE-DW-150 | 5d |
|  | MH | **Manholes Works** |  | 2026-12-01 | 2026-12-09 |  |  |
| CO-TE-MH-170 |  | Excavation Works for Manholes of Telecom Network for Alignment-RD-01 | 4d | 2026-12-01 | 2026-12-05 | ENG-SH-TE-A-110, ENG-MS-TE-A-110, ENG-MT-TE-A-110, PRO-TE-1DL-110, MS-CS-TE SS, MS-MM-130, MS-MM-140, ENG-MT-TE-A-100, PRO-TE-1DL-100, CO-SD-MH-260, CO-SD-ML-160, CO-SD-CB-200, CO-SW-ML-160, CO-PW-ML-160, CO-PW-VC-250, CO-PW-FH-190, CO-IR-ML-180, CO-MV-ML-300, CO-SL-LP-380, CO-SL-CL-300, CO-EW-210_R, PRO-LV-DP-1DL-100, PRO-LV-DP-DL-100, PRO-R25-SL-DL-160 SS, ENG-MT-SL-DB-A-100, MS-CS-SL SS | 18d |
| CO-TE-MH-180 |  | Installation Works for Manholes of Telecom Network for Alignment-RD-01 | 4d | 2026-12-01 | 2026-12-05 | CO-TE-MH-170 SS, PRO-R25-TE-DL-110 | 18d |
| CO-TE-MH-190 |  | Backfilling Works for Manholes of Telecom Network for Alignment-RD-01 | 4d | 2026-12-06 | 2026-12-09 | CO-TE-MH-180 | 18d |
|  | DD | **CCTV, Telephone, MSN, ACs System Works** |  | 2026-12-10 | 2026-12-19 |  |  |
| CO-TE-CTV-150 |  | Installation of CCTV, Telephone, ACS and MSN Systems Cables for Alignment-RD-01 | 8d | 2026-12-10 | 2026-12-19 | PRO-R25-CTV-DL-100, CO-TE-MH-190, ENG-SH-MSN-A-120, ENG-SH-CTV-A-110, ENG-MS-CTV-A-110, ENG-MT-CTV-A-100, PRO-CTV-1DL-100, MS-CS-TE SS, MS-MM-130, MS-MM-140 | 29d |
|  | RD | **Road Network** |  | 2026-12-26 | 2027-01-05 |  |  |
|  | 1 | **Roads Works** |  |  |  |  |  |
|  | LS | **Pavement Works** |  | 2026-12-26 | 2027-01-05 |  |  |
| CO-RD-PV-180 |  | Fixing of Curbstone for Sidewalks Pavement for Alignment-RD-01 | 10d | 2026-12-26 | 2027-01-05 | ENG-MS-HS-A-10, PRO-R25-RD-DL-130, PRO-RD-1DL-150, PRO-R25-RD-DL-170, PRO-RD-1DL-130, PRO-R25-RD-DL-100, PRO-RD-1DL-100, MS-MM-140, MS-MM-130, MS-CS-RD SS, ENG-SH-RD-A-100, ENG-SH-RD-A-110, ENG-MS-RD-A-30, ENG-MS-RD-A-20, ENG-MS-RD-A-10, ENG-MS-RD-A-40, CO-TE-MH-190, CO-TE-DW-160, CO-SL-CL-300, CO-SL-LP-380, CON-LV-HC-150, CON-LV-ML-150, CO-MV-ML-300, CO-IR-ML-180, CO-PW-FH-190, CO-PW-VC-250, CO-PW-ML-160, CO-TSE-ML-230, CO-SW-ML-160, CO-SW-MH-250, CO-SD-CB-200, CO-SD-ML-160, CO-SD-MH-260, CO-EW-210_R, CO-SL-LP-520 | 9d |
| CO-RD-PV-190 |  | Fixing of Interlock Tiles for Sidewalks Pavement for Alignment-RD-01 | 10d | 2026-12-26 | 2027-01-05 | CO-RD-PV-180 SS, ENG-MS-HS-A-10, PRO-R25-RD-DL-120, PRO-RD-1DL-140 | 17d |
|  | TS | **Traffic Signs Boards and Roads Marking** |  | 2026-12-26 | 2027-01-03 |  |  |
| CO-RD-F-RM-190 |  | Application of Road Marking Works For Road Works for Alignment-RD-01 | 4d | 2026-12-26 | 2026-12-29 | CO-RD-PV-190 SS, ENG-MS-MRK-A-10, PRO-R25-RD-DL-150, ENG-SH-MRK-A-110, PRO-RD-1DL-170, CO-RD-PV-180 SS, PRO-R25-RD-DL-170, PRO-RD-1DL-130, PRO-R25-RD-DL-100, PRO-RD-1DL-100, MS-MM-140, MS-MM-130, MS-CS-RD SS, ENG-SH-RD-A-100, ENG-SH-RD-A-110, ENG-MS-RD-A-30, ENG-MS-RD-A-20, ENG-MS-RD-A-10, ENG-MS-RD-A-40, CO-TE-MH-190, CO-TE-DW-160, CO-SL-CL-300, CO-SL-LP-380, CON-LV-HC-150, CON-LV-ML-150, CO-MV-ML-300, CO-IR-ML-180, CO-PW-FH-190, CO-PW-VC-250, CO-PW-ML-160, CO-TSE-ML-230, CO-SW-ML-160, CO-SW-MH-250, CO-SD-CB-200, CO-SD-ML-160, CO-SD-MH-260, CO-EW-210_R, CO-SL-LP-520 | 29d |
| CO-RD-F-TS-130 |  | Installation Works of Traffic Signs Boards For Road Works for Alignment-RD-01 | 4d | 2026-12-30 | 2027-01-03 | CO-RD-F-RM-190, ENG-MS-TSB-A-10, PRO-R25-RD-DL-140, ENG-SH-TSB-A-100, PRO-RD-1DL-160, PRO-R25-RD-DL-170, PRO-RD-1DL-130, PRO-R25-RD-DL-100, PRO-RD-1DL-100, MS-MM-140, MS-MM-130, MS-CS-RD SS, ENG-SH-RD-A-100, ENG-SH-RD-A-110, ENG-MS-RD-A-30, ENG-MS-RD-A-20, ENG-MS-RD-A-10, ENG-MS-RD-A-40, CO-TE-MH-190, CO-TE-DW-160, CO-SL-CL-300, CO-SL-LP-380, CON-LV-HC-150, CON-LV-ML-150, CO-MV-ML-300, CO-IR-ML-180, CO-PW-FH-190, CO-PW-VC-250, CO-PW-ML-160, CO-TSE-ML-230, CO-SW-ML-160, CO-SW-MH-250, CO-SD-CB-200, CO-SD-ML-160, CO-SD-MH-260, CO-EW-210_R, CO-SL-LP-520 | 29d |

| ID | WBS | Task | Duration | Start | Finish | Predecessors | Total float |
| --- | --- | --- | --- | --- | --- | --- | --- |
|  | 3 | **Finishes for Infrastructure Networks** |  | 2026-11-18 | 2027-01-20 |  |  |
|  | 11 | **Storm Drainage Network** |  | 2026-12-26 | 2027-01-20 |  |  |
|  | TF | **Testing and Finishes** |  | 2026-12-26 | 2027-01-20 |  |  |
| CO-SD-CB-TF-190 |  | Catch Basin Internal Finishes (Benching ) for Storm Drainage Network for Alignment-RD-01 | 6d | 2026-12-26 | 2026-12-31 | CO-SD-CB-200, CO-SD-MH-260, PRO-SD-1DL-140, PRO-R25-SD-DL-140, PRO-R25-RD-DL-170, PRO-RD-1DL-130, PRO-R25-RD-DL-100, PRO-RD-1DL-100, MS-MM-140, MS-MM-130, MS-CS-RD SS, ENG-SH-RD-A-100, ENG-SH-RD-A-110, ENG-MS-RD-A-30, ENG-MS-RD-A-20, ENG-MS-RD-A-10, ENG-MS-RD-A-40, CO-TE-MH-190, CO-TE-DW-160, CO-SL-CL-300, CO-SL-LP-380, CON-LV-HC-150, CON-LV-ML-150, CO-MV-ML-300, CO-IR-ML-180, CO-PW-FH-190, CO-PW-VC-250, CO-PW-ML-160, CO-TSE-ML-230, CO-SW-ML-160, CO-SW-MH-250, CO-SD-ML-160, CO-EW-210_R, CO-SL-LP-520 | 5d |
| CO-SD-ML-TF-110 |  | Testing Work for Pipes of Storm Drainage Network for Alignment-RD-01 | 2d | 2027-01-02 | 2027-01-03 | CO-SD-ML-160, CO-SD-PO-110-P1, CO-SD-PO-110-P2, CO-SD-CB-TF-190, CO-SD-MH-260, PRO-SD-1DL-140, PRO-R25-SD-DL-140, PRO-R25-RD-DL-170, PRO-RD-1DL-130, PRO-R25-RD-DL-100, PRO-RD-1DL-100, MS-MM-140, MS-MM-130, MS-CS-RD SS, ENG-SH-RD-A-100, ENG-SH-RD-A-110, ENG-MS-RD-A-30, ENG-MS-RD-A-20, ENG-MS-RD-A-10, ENG-MS-RD-A-40, CO-TE-MH-190, CO-TE-DW-160, CO-SL-CL-300, CO-SL-LP-380, CON-LV-HC-150, CON-LV-ML-150, CO-MV-ML-300, CO-IR-ML-180, CO-PW-FH-190, CO-PW-VC-250, CO-PW-ML-160, CO-TSE-ML-230, CO-SW-ML-160, CO-SW-MH-250, CO-SD-CB-200, CO-EW-210_R, CO-SL-LP-520 | 5d |
| CO-SD-MH-TF-230 |  | Testing Works for Manholes of Storm Drainage Network for Alignment-RD-01 | 2d | 2027-01-04 | 2027-01-05 | CO-SD-MH-260, CO-SD-ML-TF-110, PRO-SD-1DL-140, PRO-R25-SD-DL-140, PRO-R25-RD-DL-170, PRO-RD-1DL-130, PRO-R25-RD-DL-100, PRO-RD-1DL-100, MS-MM-140, MS-MM-130, MS-CS-RD SS, ENG-SH-RD-A-100, ENG-SH-RD-A-110, ENG-MS-RD-A-30, ENG-MS-RD-A-20, ENG-MS-RD-A-10, ENG-MS-RD-A-40, CO-TE-MH-190, CO-TE-DW-160, CO-SL-CL-300, CO-SL-LP-380, CON-LV-HC-150, CON-LV-ML-150, CO-MV-ML-300, CO-IR-ML-180, CO-PW-FH-190, CO-PW-VC-250, CO-PW-ML-160, CO-TSE-ML-230, CO-SW-ML-160, CO-SW-MH-250, CO-SD-CB-200, CO-SD-ML-160, CO-EW-210_R, CO-SL-LP-520 | 5d |
| CO-SD-CB-TF-170 |  | Testing Works for Catch Basins of Storm Drainage Network for Alignment-RD-01 | 7d | 2027-01-06 | 2027-01-13 | CO-SD-CB-200, CO-SD-CB-TF-190, CO-SD-MH-TF-230 | 5d |
| CO-SD-CB-TF-180 |  | Install Catch Basin Cover Works for External Finishes of Storm Drainage Network for Alignment-RD-01 | 6d | 2027-01-14 | 2027-01-20 | CO-SD-CB-TF-190, PRO-SD-1DL-150, PRO-R25-SD-DL-150, CO-SD-CB-200, CO-SD-CB-TF-170, PRO-R25-RD-DL-170, PRO-RD-1DL-130, PRO-R25-RD-DL-100, PRO-RD-1DL-100, MS-MM-140, MS-MM-130, MS-CS-RD SS, ENG-SH-RD-A-100, ENG-SH-RD-A-110, ENG-MS-RD-A-30, ENG-MS-RD-A-20, ENG-MS-RD-A-10, ENG-MS-RD-A-40, CO-TE-MH-190, CO-TE-DW-160, CO-SL-CL-300, CO-SL-LP-380, CON-LV-HC-150, CON-LV-ML-150, CO-MV-ML-300, CO-IR-ML-180, CO-PW-FH-190, CO-PW-VC-250, CO-PW-ML-160, CO-TSE-ML-230, CO-SW-ML-160, CO-SW-MH-250, CO-SD-ML-160, CO-SD-MH-260, CO-EW-210_R, CO-SL-LP-520 | 18d |
|  | 10 | **Sewage Network** |  | 2026-12-26 | 2027-01-02 |  |  |
|  | TF | **Testing and Finishes** |  | 2026-12-26 | 2027-01-02 |  |  |
| CO-SW-TF-250 |  | Testing Works for Main Line Manholes of Sewage Network for Alignment-RD-01 | 3d | 2026-12-26 | 2026-12-28 | CO-SW-MH-250, CO-SW-ML-160, CO-TSE-ML-230, CO-SD-MH-260, PRO-SD-1DL-140, PRO-R25-SD-DL-140, PRO-R25-RD-DL-170, PRO-RD-1DL-130, PRO-R25-RD-DL-100, PRO-RD-1DL-100, MS-MM-140, MS-MM-130, MS-CS-RD SS, ENG-SH-RD-A-100, ENG-SH-RD-A-110, ENG-MS-RD-A-30, ENG-MS-RD-A-20, ENG-MS-RD-A-10, ENG-MS-RD-A-40, CO-TE-MH-190, CO-TE-DW-160, CO-SL-CL-300, CO-SL-LP-380, CON-LV-HC-150, CON-LV-ML-150, CO-MV-ML-300, CO-IR-ML-180, CO-PW-FH-190, CO-PW-VC-250, CO-PW-ML-160, CO-SD-CB-200, CO-SD-ML-160, CO-EW-210_R, CO-SL-LP-520 | 24d |
| CO-SW-TF-230 |  | Final Testing For Main Line of Sewage Network for Alignment-RD-01 | 4d | 2026-12-29 | 2027-01-02 | CO-SW-ML-160, CO-SW-MH-250, CO-TSE-ML-230, CO-SW-TF-250 | 24d |
|  | 9 | **Potable Water Network** |  | 2026-12-26 | 2027-01-03 |  |  |
|  | TF | **Testing and Finishes** |  | 2026-12-26 | 2027-01-03 |  |  |
| CO-PW-TF-140 |  | Fire Hydrant Finishies (S.Box + Safety + Marker Post ) of Potable Water Network for Alignment-RD-01 | 4d | 2026-12-26 | 2026-12-29 | CO-PW-FH-190, ENG-MT-PW-TF-A-100, PRO-R25-RD-DL-170, PRO-RD-1DL-130, PRO-R25-RD-DL-100, PRO-RD-1DL-100, MS-MM-140, MS-MM-130, MS-CS-RD SS, ENG-SH-RD-A-100, ENG-SH-RD-A-110, ENG-MS-RD-A-30, ENG-MS-RD-A-20, ENG-MS-RD-A-10, ENG-MS-RD-A-40, CO-TE-MH-190, CO-TE-DW-160, CO-SL-CL-300, CO-SL-LP-380, CON-LV-HC-150, CON-LV-ML-150, CO-MV-ML-300, CO-IR-ML-180, CO-PW-VC-250, CO-PW-ML-160, CO-TSE-ML-230, CO-SW-ML-160, CO-SW-MH-250, CO-SD-CB-200, CO-SD-ML-160, CO-SD-MH-260, CO-EW-210_R, CO-SL-LP-520 | 21d |
| CO-PW-TF-150 |  | Final Finishes works and Covers for Valves and Valve Chambers for Alignment-RD-01 | 2d | 2026-12-30 | 2026-12-31 | CO-PW-VC-250, ENG-MT-PW-TF-A-100, PRO-PW-1DL-130, PRO-R25-PW-DL-130, CO-PW-TF-140 | 21d |
| CO-PW-TF-220 |  | Testing of Potable Water Network for Alignment-RD-01 | 2d | 2027-01-02 | 2027-01-03 | CO-PW-ML-160, CO-PW-TF-150 | 21d |
|  | 13 | **Irrigation Network** |  | 2027-01-04 | 2027-01-05 |  |  |
|  | TF | **Testing and Finishes** |  | 2027-01-04 | 2027-01-05 |  |  |
| CO-IR-TF-170 |  | Final Testing (pressure tests) of Irrigation Network for Alignment-RD-01 | 2d | 2027-01-04 | 2027-01-05 | CO-IR-ML-190, CO-PW-TF-220 | 21d |
|  | 1 | **Treated Sewage Effluent (Tse)** |  | 2027-01-04 | 2027-01-05 |  |  |
|  | TF | **Testing and Finishes** |  | 2027-01-04 | 2027-01-05 |  |  |
| CO-TSE-TF-210 |  | Final Testing (pressure tests) of Treated Sewage Effluent (Tse) for Alignment-RD-01 | 2d | 2027-01-04 | 2027-01-05 | CO-TSE-ML-230, CO-PW-TF-220 | 31d |
|  | 14 | **Medium Voltage Network** |  | 2026-11-18 | 2026-11-19 |  |  |
|  | TT | **Termination and Testing Works** |  | 2026-11-18 | 2026-11-19 |  |  |
| CO-MV-TF-230 |  | Testing and Termination Works of Medium Voltage Network for Alignment-RD-01 | 2d | 2026-11-18 | 2026-11-19 | CO-MV-ML-300 | 25d |
|  | 6 | **Low Voltage Network** |  | 2026-12-17 | 2026-12-21 |  |  |
|  | TT | **Termination and Testing Works** |  | 2026-12-17 | 2026-12-21 |  |  |
| CON-LV-TT-120 |  | Testing and Termination Works for Substation Low Voltage Panel Boards of Low Voltage Network for Alignment-RD-01 | 4d | 2026-12-17 | 2026-12-21 | PRO-LV-TT-1DL-100, PRO-LV-TT-DL-100, CON-LV-HC-150, CON-LV-ML-150, CO-MV-TF-230, PRO-LV-DP-1DL-100, PRO-LV-DP-DL-100, CON-LV-DP-130 | 37d |
|  | 1 | **Earthing System Works** |  |  |  |  |  |
|  | 12 | **Street Lighting Network** |  | 2026-12-01 | 2026-12-26 |  |  |
|  | TR | **Termination and Testing Works** |  | 2026-12-01 | 2026-12-26 |  |  |
| CO-SL-LP-370 |  | Installation Works for Lighting Fixtures With Drop Wire of Street Lighting Network for Alignment-RD-01 | 6d | 2026-12-01 | 2026-12-07 | CO-SL-LP-380, ENG-MT-SL-A-120, PRO-R25-SL-DL-140, CO-SL-LP-570, PRO-R25-SL-DL-160 SS, CO-SL-CL-300, ENG-MT-SL-DB-A-100, MS-CS-SL SS, CO-EW-210_R, MS-MM-130, MS-MM-140 | 10d |
| CO-SL-TF-410 |  | Testing Works for Lighting Poles of Street Lighting Network for Alignment-RD-01 | 3d | 2026-12-23 | 2026-12-26 | CO-SL-LP-370, CO-SL-ES-250, PRO-R25-SL-DL-130, PRO-R25-SL-DL-160 SS, CO-SL-LP-380, CO-SL-CL-300, ENG-MT-SL-DB-A-100, MS-CS-SL SS, CO-EW-210_R, MS-MM-130, MS-MM-140 | 34d |
|  | ES | **Earthing System Works** |  | 2026-12-17 | 2026-12-22 |  |  |
| CO-SL-ES-240 |  | Install Earthing System Works for Lighting Poles of Street Lighting Network for Alignment-RD-01 | 3d | 2026-12-17 | 2026-12-20 | CO-SL-LP-370, ENG-MT-SL-ES-A-100, PRO-R25-SL-DL-150 | 28d |
| CO-SL-ES-250 |  | Install Earthing System Works for Lighting Panel Boards of Street Lighting Network for Alignment-RD-01 | 2d | 2026-12-21 | 2026-12-22 | CO-SL-ES-240, PRO-R25-SL-DL-150 | 29d |
|  | 3 | **Telecom and Light Current Network** |  | 2026-12-26 | 2026-12-31 |  |  |
|  | 1 | **Testing and Finishes** |  | 2026-12-26 | 2026-12-31 |  |  |
| CO-TE-CTV-TF-180 |  | Testing and Interface modules with Telecom for Alignment-RD-01 | 3d | 2026-12-26 | 2026-12-28 | CO-TE-MH-190, CO-TE-DW-160, CO-TE-CTV-150 SS | 21d |
| CO-TE-CTV-TF-310 |  | Testing and Interface modules with CCTV, Telephone, MSN and Access Control for Alignment-RD-01 | 3d | 2026-12-29 | 2026-12-31 | CO-TE-CTV-TF-180, CO-TE-CTV-150 SS | 21d |
|  | 5 | **Alignment-RD-02** |  | 2026-07-20 | 2027-02-10 |  |  |
|  | EW | **Earthworks** |  | 2026-07-20 | 2026-08-02 |  |  |
|  | EW | **Earthworks** |  | 2026-07-20 | 2026-08-02 |  |  |
| CO-EW-220 |  | Excavation and Backfilling Works Upto Design Level for Earthworks for Alignment-RD-02 | 12d | 2026-07-20 | 2026-08-02 | MS-CS-PS SS, MOB-30, MOB-20, MOB-80, MOB-40, MOB-50, MOB-60, MOB-10, MOB-70, PRE-CON-MDC-10, PRE-CON-MDC-20, PRE-CON-MDC-30, PRE-CON-MDC-40, PRE-CON-MDC-50, PRE-CON-MDC-60, PRE-CON-MDC-70, PRE-CON-MDC-80, MS-MM-100, MS-MM-130, MS-MM-140, MS-MM-150, CO-EW-230 | 3d |
|  | SD | **Storm Drainage Network** |  | 2026-08-03 | 2026-11-22 |  |  |
|  | MH | **Manholes** |  | 2026-08-03 | 2026-08-17 |  |  |
| CO-SD-MH-270 |  | Trench Excavation and Bedding Works for Manholes of Storm Drainage Network for Alignment-RD-02 | 4d | 2026-08-03 | 2026-08-06 | ENG-MT-SD-ML-A-100, MS-CS-SD SS, CO-EW-220, ENG-MS-SD-ML-A-110, ENG-MT-SD-ML-A-110, ENG-SH-SD-ML-A-110, MS-MM-130, MS-MM-140, CO-EW-230, CO-SD-MH-180 | 3d |
| CO-SD-MH-280 |  | Install RC Footing Works for Manholes of Storm Drainage Network for Alignment-RD-02 | 3d | 2026-08-08 | 2026-08-10 | CO-SD-MH-270, PRO-R25-SD-DL-100 FF, PRO-SD-1DL-100, PRO-R25-SD-DL-100, CO-SD-MH-190, ENG-MT-SD-ML-A-100, MS-CS-SD SS, CO-EW-230, ENG-MS-SD-ML-A-110, ENG-MT-SD-ML-A-110, ENG-SH-SD-ML-A-110, MS-MM-130, MS-MM-140, CO-SD-MH-180 | 3d |
| CO-SD-MH-290 |  | Install RC Wall Rings & Slab Works for Manholes of Storm Drainage Network for Alignment-RD-02 | 3d | 2026-08-11 | 2026-08-13 | CO-SD-MH-280, PRO-SD-1DL-100, CO-SD-MH-200, PRO-R25-SD-DL-100, CO-SD-MH-190, ENG-MT-SD-ML-A-100, MS-CS-SD SS, CO-EW-230, ENG-MS-SD-ML-A-110, ENG-MT-SD-ML-A-110, ENG-SH-SD-ML-A-110, MS-MM-130, MS-MM-140, CO-SD-MH-180 | 3d |
| CO-SD-MH-300 |  | Backfilling Works for Manholes of Storm Drainage Network for Alignment-RD-02 | 3d | 2026-08-15 | 2026-08-17 | CO-SD-MH-290, CO-SD-MH-220, PRO-SD-1DL-100, CO-SD-MH-200, PRO-R25-SD-DL-100, CO-SD-MH-190, ENG-MT-SD-ML-A-100, MS-CS-SD SS, CO-EW-230, ENG-MS-SD-ML-A-110, ENG-MT-SD-ML-A-110, ENG-SH-SD-ML-A-110, MS-MM-130, MS-MM-140, CO-SD-MH-180 | 9d |
|  | ML | **Main Line Sections** |  | 2026-08-15 | 2026-08-27 |  |  |
| CO-SD-ML-170 |  | Trench Excavation and Bedding Works for Main Lines of Storm Drainage Network for Alignment-RD-02 | 3d | 2026-08-15 | 2026-08-17 | CO-EW-220, ENG-SH-SD-ML-A-110, ENG-MS-SD-ML-A-110, ENG-MT-SD-ML-A-110, MS-CS-SD SS, MS-MM-130, MS-MM-140, CO-SD-MH-290, CO-SD-MH-270 SS, CO-SD-MH-270 FF, CO-SD-ML-200 | 3d |
| CO-SD-ML-180 |  | Pipes Laying Works for Main Lines of Storm Drainage Network for Alignment-RD-02 | 3d | 2026-08-20 | 2026-08-23 | CO-SD-ML-170, PRO-R25-SD-DL-120 FF, PRO-SD-1DL-110, CO-SD-MH-290, CO-SD-ML-210 | 1d |
| CO-SD-ML-190 |  | Trench Backfilling and Compaction Works for Main Lines of Storm Drainage Network for Alignment-RD-02 | 3d | 2026-08-25 | 2026-08-27 | CO-SD-ML-180, CO-SD-ML-220, CO-SD-MH-300 FF | 0d |
|  | CB | **Catch Basin Sections** |  | 2026-08-29 | 2026-11-22 |  |  |
| CO-SD-CB-210 |  | Trench Excavation and Bedding Works for Catch Basins of Storm Drainage Network for Alignment-RD-02 | 18d | 2026-08-29 | 2026-09-17 | ENG-MT-SD-CB-A-110, ENG-SH-SD-CB-A-110, ENG-MS-SD-CB-A-110, MS-CS-SD SS, CO-SD-ML-190, MS-MM-130, MS-MM-140, CO-SD-ML-220, CO-SD-ML-130 | 31d |
| CO-SD-CB-220 |  | Installation and Pipes Laying Connection Works for Catch Basins of Storm Drainage Network for Alignment-RD-02 | 19d | 2026-09-19 | 2026-10-11 | CO-SD-CB-210, PRO-R25-SD-DL-110 FF, PRO-R25-SD-DL-130 FF, PRO-SD-1DL-130, PRO-SD-1DL-120, PRO-R25-SD-DL-110, PRO-R25-SD-DL-130, ENG-MT-SD-CB-A-110, ENG-SH-SD-CB-A-110, ENG-MS-SD-CB-A-110, MS-CS-SD SS, CO-SD-ML-130, MS-MM-130, MS-MM-140, CO-SD-ML-220 | 31d |
| CO-SD-CB-230 |  | Trench Backfilling and Compaction Works for Catch Basins of Storm Drainage Network for Alignment-RD-02 | 5d | 2026-11-17 | 2026-11-22 | CO-SD-CB-220, CO-SD-PO-110-P1 FF, CO-SD-ML-130, PRO-R25-SD-DL-110, PRO-R25-SD-DL-130, PRO-SD-1DL-130, PRO-SD-1DL-120, ENG-MT-SD-CB-A-110, ENG-SH-SD-CB-A-110, ENG-MS-SD-CB-A-110, MS-CS-SD SS, MS-MM-130, MS-MM-140, CO-SD-ML-220 | 0d |
|  | SW | **Sewage Network** |  | 2026-08-29 | 2026-11-04 |  |  |
|  | 1 | **Manholes** |  | 2026-08-29 | 2026-11-04 |  |  |
| CO-SW-MH-260 |  | Excavation Works for Main Line Manholes of Sewage Network for Alignment-RD-02 | 11d | 2026-08-29 | 2026-09-09 | ENG-MT-SW-ML-A-100, ENG-SH-SW-ML-A-110, MS-CS-SW SS, CO-EW-220, MS-MM-130, MS-MM-140, ENG-MS-SW-ML-A-110, CO-SD-MH-300, CO-SD-ML-190, CO-EW-230, CO-SD-MH-220, PRO-SD-1DL-100, CO-SD-MH-200, PRO-R25-SD-DL-100, CO-SD-MH-190, ENG-MT-SD-ML-A-100, MS-CS-SD SS, ENG-MS-SD-ML-A-110, ENG-MT-SD-ML-A-110, ENG-SH-SD-ML-A-110, CO-SD-MH-180 | 0d |
| CO-SW-MH-270 |  | Installation RC Footing Works for Main Line Manholes of Sewage Network for Alignment-RD-02 | 11d | 2026-09-10 | 2026-09-22 | CO-SW-MH-260, PRO-SW-1DL-110, PRO-R25-SW-DL-110, PRO-SW-1DL-110 SS, ENG-MT-SW-ML-A-100, ENG-SH-SW-ML-A-110, MS-CS-SW SS, CO-EW-230, MS-MM-130, MS-MM-140, ENG-MS-SW-ML-A-110, CO-SD-MH-220, PRO-SD-1DL-100, CO-SD-MH-200, PRO-R25-SD-DL-100, CO-SD-MH-190, ENG-MT-SD-ML-A-100, MS-CS-SD SS, ENG-MS-SD-ML-A-110, ENG-MT-SD-ML-A-110, ENG-SH-SD-ML-A-110, CO-SD-MH-180 | 0d |
| CO-SW-MH-280 |  | Install Grp Liner Wall Works for Main Line Manholes of Sewage Network for Alignment-RD-02 | 12d | 2026-09-24 | 2026-10-07 | CO-SW-MH-270, PRO-SW-1DL-110 SS, ENG-MT-SW-ML-A-100, ENG-SH-SW-ML-A-110, MS-CS-SW SS, CO-EW-230, MS-MM-130, MS-MM-140, ENG-MS-SW-ML-A-110, CO-SD-MH-220, PRO-SD-1DL-100, CO-SD-MH-200, PRO-R25-SD-DL-100, CO-SD-MH-190, ENG-MT-SD-ML-A-100, MS-CS-SD SS, ENG-MS-SD-ML-A-110, ENG-MT-SD-ML-A-110, ENG-SH-SD-ML-A-110, CO-SD-MH-180 | 0d |
| CO-SW-MH-290 |  | Pouring Grp Liner Wall Works for Main Line Manholes of Sewage Network for Alignment-RD-02 | 12d | 2026-10-08 | 2026-10-21 | CO-SW-MH-280, PRO-SW-1DL-110 SS, ENG-MT-SW-ML-A-100, ENG-SH-SW-ML-A-110, MS-CS-SW SS, CO-EW-230, MS-MM-130, MS-MM-140, ENG-MS-SW-ML-A-110, CO-SD-MH-220, PRO-SD-1DL-100, CO-SD-MH-200, PRO-R25-SD-DL-100, CO-SD-MH-190, ENG-MT-SD-ML-A-100, MS-CS-SD SS, ENG-MS-SD-ML-A-110, ENG-MT-SD-ML-A-110, ENG-SH-SD-ML-A-110, CO-SD-MH-180 | 0d |
| CO-SW-MH-300 |  | Backfilling Works for Main Line Manholes of Sewage Network for Alignment-RD-02 | 12d | 2026-10-22 | 2026-11-04 | CO-SW-MH-290, PRO-SW-1DL-110 SS, ENG-MT-SW-ML-A-100, ENG-SH-SW-ML-A-110, MS-CS-SW SS, CO-EW-230, MS-MM-130, MS-MM-140, ENG-MS-SW-ML-A-110, CO-SD-MH-220, PRO-SD-1DL-100, CO-SD-MH-200, PRO-R25-SD-DL-100, CO-SD-MH-190, ENG-MT-SD-ML-A-100, MS-CS-SD SS, ENG-MS-SD-ML-A-110, ENG-MT-SD-ML-A-110, ENG-SH-SD-ML-A-110, CO-SD-MH-180 | 0d |
|  | ML | **Main Line Sections** |  | 2026-08-29 | 2026-11-04 |  |  |
| CO-SW-ML-170 |  | Trench Excavation and Bedding Works for Main Lines of Sewage Network for Alignment-RD-02 | 11d | 2026-08-29 | 2026-09-09 | ENG-SH-SW-ML-A-110, ENG-MS-SW-ML-A-110, ENG-MT-SW-ML-A-110, MS-CS-SW SS, CO-EW-220, MS-MM-130, MS-MM-140, CO-SW-MH-260 SS, CO-SW-MH-260 FF, CO-SD-MH-300, CO-SD-ML-190, CO-EW-230, CO-SD-ML-220, CO-SD-MH-220, PRO-SD-1DL-100, CO-SD-MH-200, PRO-R25-SD-DL-100, CO-SD-MH-190, ENG-MT-SD-ML-A-100, MS-CS-SD SS, ENG-MS-SD-ML-A-110, ENG-MT-SD-ML-A-110, ENG-SH-SD-ML-A-110, CO-SD-MH-180, ENG-MT-SW-ML-A-100 | 39d |
| CO-SW-ML-180 |  | Pipes Laying Works for Main Lines of Sewage Network for Alignment-RD-02 | 11d | 2026-09-10 | 2026-09-22 | CO-SW-ML-170, PRO-SW-1DL-100, PRO-R25-SW-DL-100, ENG-SH-SW-ML-A-110, ENG-MS-SW-ML-A-110, ENG-MT-SW-ML-A-110, MS-CS-SW SS, CO-EW-230, MS-MM-130, MS-MM-140, CO-SD-ML-220, CO-SD-MH-220, PRO-SD-1DL-100, CO-SD-MH-200, PRO-R25-SD-DL-100, CO-SD-MH-190, ENG-MT-SD-ML-A-100, MS-CS-SD SS, ENG-MS-SD-ML-A-110, ENG-MT-SD-ML-A-110, ENG-SH-SD-ML-A-110, CO-SD-MH-180, ENG-MT-SW-ML-A-100 | 39d |
| CO-SW-ML-190 |  | Trench Backfilling and Compaction Works for Main Lines of Sewage Network for Alignment-RD-02 | 11d | 2026-10-24 | 2026-11-04 | CO-SW-ML-180, CO-SW-MH-300 FF, PRO-SW-1DL-110 SS, ENG-MT-SW-ML-A-100, ENG-SH-SW-ML-A-110, MS-CS-SW SS, CO-EW-230, MS-MM-130, MS-MM-140, ENG-MS-SW-ML-A-110, CO-SD-MH-220, PRO-SD-1DL-100, CO-SD-MH-200, PRO-R25-SD-DL-100, CO-SD-MH-190, ENG-MT-SD-ML-A-100, MS-CS-SD SS, ENG-MS-SD-ML-A-110, ENG-MT-SD-ML-A-110, ENG-SH-SD-ML-A-110, CO-SD-MH-180, PRO-SW-1DL-100, ENG-MT-SW-ML-A-110, CO-SD-ML-220 | 14d |

| ID | WBS | Task | Duration | Start | Finish | Predecessors | Total float |
| --- | --- | --- | --- | --- | --- | --- | --- |
|  | TSE | **Treated Sewage Effluent (Tse)** |  | 2026-08-29 | 2026-10-15 |  |  |
| CO-TSE-ML-250 |  | Trench Excavation and Bedding Works for Main Lines of Treated Sewage Effluent (Tse) for Alignment-RD-02 | 12d | 2026-08-29 | 2026-09-10 | ENG-SH-TSE-ML-A-120, ENG-MS-TSE-ML-A-120, ENG-MT-IR-ML-A-120, MS-CS-TSE SS, CO-EW-220, MS-MM-130, MS-MM-140, CO-SW-MH-260 SS | 14d |
| CO-TSE-ML-260 |  | Pipes Laying Works for Main Lines of Treated Sewage Effluent (Tse) for Alignment-RD-02 | 17d | 2026-09-12 | 2026-10-01 | CO-TSE-ML-250, PRO-TSE-1DL-120, PRO-R25-TSE-DL-120 | 14d |
| CO-TSE-ML-280 |  | Trench Backfilling and Compaction Works for Treated Sewage Effluent (Tse) for Alignment-RD-02 | 12d | 2026-10-03 | 2026-10-15 | CO-TSE-ML-260 | 14d |
|  | PW | **Potable Water Network** |  | 2026-10-17 | 2026-11-05 |  |  |
|  | ML | **Main Line Sections** |  | 2026-10-17 | 2026-11-04 |  |  |
| CO-PW-ML-170 |  | Trench Excavation and Bedding Works for Main Lines of Potable Water Network for Alignment-RD-02 | 5d | 2026-10-17 | 2026-10-21 | ENG-SH-PW-ML-A-110, ENG-MS-PW-ML-A-110, ENG-MT-PW-ML-A-100, MS-CS-PW SS, CO-EW-220, MS-MM-130, MS-MM-140, CO-TSE-ML-250 SS, CO-TSE-ML-280 | 14d |
| CO-PW-ML-180 |  | Pipes Laying and accessories for Main Lines of Potable Water Network for Alignment-RD-02 | 7d | 2026-10-22 | 2026-10-29 | CO-PW-ML-170, PRO-PW-1DL-100, PRO-R25-PW-DL-100 SS | 14d |
| CO-PW-ML-190 |  | Trench Backfilling and Compaction Works for Main Lines of Potable Water Network for Alignment-RD-02 | 5d | 2026-10-31 | 2026-11-04 | CO-PW-ML-180 | 15d |
|  | VC | **Valve Chamber** |  | 2026-10-17 | 2026-11-05 |  |  |
| CO-PW-VC-260 |  | Excavation Works for Main Line Valves and Valve Chambers of Potable Water Network for Alignment-RD-02 | 5d | 2026-10-17 | 2026-10-21 | ENG-MT-PW-ML-A-110, MS-CS-PW SS, CO-PW-ML-170 SS, CO-PW-ML-170 FF, MS-MM-130, MS-MM-140, CO-TSE-ML-310 | 14d |
| CO-PW-VC200 |  | Installation of Valve Chambers of Potable Water Network for Alignment-RD-02 | 3d | 2026-10-22 | 2026-10-25 | CO-PW-VC-260, PRO-R25-PW-DL-120 | 14d |
| CO-PW-VC-270 |  | Installation Works for Valves of Potable Water Network for Alignment-RD-02 | 5d | 2026-10-26 | 2026-10-31 | CO-PW-VC200, PRO-PW-1DL-110, PRO-R25-PW-DL-110 SS | 14d |
| CO-PW-VC-280 |  | Backfilling Works for Main Line Valves and Valve Chambers of Potable Water Network for Alignment-RD-02 | 5d | 2026-11-01 | 2026-11-05 | CO-PW-VC-270 | 14d |
|  | FH | **Fire Hydrant** |  | 2026-10-22 | 2026-11-05 |  |  |
| CO-PW-FH-200 |  | Excavation Works for Fire Hydrants of Potable Water Network for Alignment-RD-02 | 3d | 2026-10-22 | 2026-10-25 | CO-PW-VC-260, ENG-SH-PW-FH-A-110, ENG-MT-PW-FH-A-100, MS-CS-PW SS, CO-EW-220, MS-MM-130, MS-MM-140 | 18d |
| CO-PW-FH-210 |  | Installation Works for Fire Hydrant of Potable Water Network for Alignment-RD-02 | 3d | 2026-10-31 | 2026-11-02 | CO-PW-FH-200, PRO-PW-1DL-120, CO-PW-ML-180 | 14d |
| CO-PW-FH-220 |  | Trench Backfilling and Compaction Works for Fire Hydrants of Potable Water Network for Alignment-RD-02 | 3d | 2026-11-03 | 2026-11-05 | CO-PW-FH-210, CO-PW-VC-280 FF | 14d |
|  | IR | **Irrigation Network** |  | 2026-10-27 | 2026-11-12 |  |  |
|  | ML | **Main Line Pipes** |  | 2026-10-27 | 2026-11-12 |  |  |
| CO-IR-ML-200 |  | Trench Excavation and Bedding Works for Main Lines of Irrigation Network for Alignment-RD-02 | 3d | 2026-10-27 | 2026-10-29 | ENG-SH-IR-ML-A-110, ENG-MS-IR-ML-A-110, ENG-MT-IR-ML-A-100, CO-PW-ML-170, MS-CS-IR SS, CO-EW-220, MS-MM-130, MS-MM-140, CO-IR-ML-350 | 25d |
| CO-IR-ML-210 |  | Pipes Laying Works for Main Lines of Irrigation Network for Alignment-RD-02 | 3d | 2026-10-31 | 2026-11-02 | CO-IR-ML-200, PRO-IR-1DL-100, CO-PW-ML-180, PRO-R25-IR-DL-100, CO-IR-ML-360 | 25d |
| CO-IR-ML-220 |  | Installation Works for Main Line Valves of Irrigation Network for Alignment-RD-02 | 3d | 2026-11-03 | 2026-11-05 | CO-IR-ML-210, ENG-MT-IR-ML-A-110, PRO-IR-1DL-110, PRO-R25-IR-DL-110, CO-IR-ML-370 | 25d |
| CO-IR-ML-240 |  | Installation Works for Bulbblers And Sprinkler and Irrigation Control System of Irrigation Network for Alignment-RD-02 | 3d | 2026-11-07 | 2026-11-09 | CO-IR-ML-220, CO-IR-ML-390 | 25d |
| CO-IR-ML-230 |  | Trench Backfilling and Compaction Works for Main Lines of Irrigation Network for Alignment-RD-02 | 3d | 2026-11-10 | 2026-11-12 | CO-IR-ML-240, CO-IR-ML-380 | 25d |
|  | MV | **Medium Voltage Network** |  | 2026-11-23 | 2026-12-06 |  |  |
|  | CW | **Cabling Works** |  | 2026-11-23 | 2026-12-06 |  |  |
| CO-MV-ML-310 |  | Trench Excavation and Bedding Works for Medium Voltage Network for Alignment-RD-02 | 4d | 2026-11-23 | 2026-11-26 | ENG-SH-MV-A-110, ENG-MS-MV-A-110, MS-CS-MV SS, CO-PW-FH-220, CO-SW-ML-190, CO-SD-CB-230, CO-SD-ML-190, CO-SD-MH-300, CO-SW-MH-300, CO-PW-VC-280, CO-EW-220, MS-MM-130, MS-MM-140, CO-PW-ML-190 | 0d |
| CO-MV-ML-320 |  | Duct Laying Works for Medium Voltage Network for Alignment-RD-02 | 4d | 2026-11-28 | 2026-12-01 | CO-MV-ML-310, PRO-MV-DL-100, PRO-MV-1DL-100 | 0d |
| CO-MV-ML-330 |  | Trench Backfilling and Compaction Works for Medium Voltage Network for Alignment-RD-02 | 4d | 2026-12-02 | 2026-12-06 | CO-MV-ML-320 | 0d |
|  | LV | **Low Voltage Network** |  | 2026-11-14 | 2026-12-28 |  |  |
|  | MLVC | **Main Low Voltage Cables Works ( Cable 300 MM )** |  | 2026-11-14 | 2026-12-22 |  |  |
| CON-LV-ML-170 |  | Cable Laying Works for Main Cable of Low Voltage Network for Alignment-RD-02 | 12d | 2026-11-14 | 2026-11-26 | PRO-LV-ML-1DL-100, PRO-LV-ML-DL-100, CO-IR-ML-230 | 25d |
| CON-LV-ML-160 |  | Trench Excavation and Bedding Works for Main Cable of Low Voltage Network for Alignment-RD-02 | 5d | 2026-12-07 | 2026-12-12 | CO-SD-CB-230, CO-PW-ML-190, ENG-SH-LV-A-120, ENG-MS-MV-A-120, MS-CS-LV SS, CO-MV-ML-330, CO-SW-ML-190, CO-EW-220, MS-MM-130, MS-MM-140 | 0d |
| CON-LV-ML-180 |  | Trench Backfilling and Compaction Works for Main Cable of Low Voltage Network for Alignment-RD-02 | 9d | 2026-12-13 | 2026-12-22 | CON-LV-ML-160 | 9d |
|  | SLVC | **Service Low Voltage Cables Works ( Cable 70 MM )** |  | 2026-12-13 | 2026-12-28 |  |  |
| CON-LV-HC-160 |  | Trench Excavation and Bedding Works for Service Cable of Low Voltage Network for Alignment-RD-02 | 4d | 2026-12-13 | 2026-12-16 | CON-LV-ML-160, ENG-MS-MV-A-120, MS-CS-LV SS, CO-EW-220, ENG-SH-LV-A-120, MS-MM-130, MS-MM-140, CO-PW-ML-190, CO-PW-VC-280, CO-PW-FH-220, CO-TSE-ML-280, CO-SW-ML-190, CO-SW-MH-300, CO-SD-CB-230, CO-SD-ML-190, CO-SD-MH-300 | 8d |
| CON-LV-HC-170 |  | Cable Laying Works for Service Cable of Low Voltage Network for Alignment-RD-02 | 6d | 2026-12-17 | 2026-12-23 | CON-LV-HC-160, CON-LV-ML-170, PRO-LV-HC-1DL-100, PRO-LV-HC-DL-100 | 8d |
| CON-LV-HC-180 |  | Trench Backfilling and Compaction Works for Service Cable of Low Voltage Network for Alignment-RD-02 | 4d | 2026-12-24 | 2026-12-28 | CON-LV-HC-170, CON-LV-ML-180 | 8d |
|  | DP | **Distribution Pillars Works** |  | 2026-12-07 | 2026-12-22 |  |  |
| CON-LV-DP-160 |  | Foundation Excavation Works for Distribution Pillars of Low Voltage Network for Alignment-RD-02 | 6d | 2026-12-07 | 2026-12-13 | CON-LV-ML-160 SS, CON-LV-ML-160 FF, ENG-MS-MV-A-120, MS-CS-LV SS, CO-EW-220, MS-MM-130, MS-MM-140 | 0d |
| CON-LV-DP-170 |  | Pouring Plain Concrete For Distribution Pillar Units of Low Voltage Network for Alignment-RD-02 | 4d | 2026-12-14 | 2026-12-17 | CON-LV-DP-160 | 20d |
| CON-LV-DP-180 |  | Installation Works for Distribution Pillar Units of Low Voltage Network for Alignment-RD-02 | 4d | 2026-12-19 | 2026-12-22 | CON-LV-DP-170, PRO-LV-DP-1DL-100, PRO-LV-DP-DL-100 SS | 20d |
|  | SL | **Street Lighting Network** |  | 2026-12-14 | 2027-01-06 |  |  |
|  | LP | **Lighting Poles Works** |  | 2026-12-14 | 2026-12-26 |  |  |
| CO-SL-LP-400 |  | Installation Works for Lighting Poles Foundation of Street Lighting Network for Alignment-RD-02 | 4d | 2026-12-14 | 2026-12-17 | PRO-R25-SL-DL-110, ENG-SH-SL-A-110, ENG-MS-SL-A-110, ENG-MT-SL-A-100, MS-CS-SL SS, CO-EW-220, MS-MM-130, MS-MM-140, CON-LV-DP-160 | 0d |
| CO-SL-LP-410 |  | Installation Works for Lighting Poles of Street Lighting Network for Alignment-RD-02 | 4d | 2026-12-19 | 2026-12-22 | CO-SL-LP-400, ENG-MT-SL-A-110, PRO-R25-SL-DL-120 | 0d |
| CO-SL-LP-430 |  | Backfilling Works for Lighting Poles of Street Lighting Network for Alignment-RD-02 | 3d | 2026-12-23 | 2026-12-26 | CO-SL-LP-410 | 0d |
|  | CW | **Cabling Works** |  | 2026-12-14 | 2026-12-21 |  |  |
| CO-SL-CL-320 |  | Cable Laying Works for Street Lighting Network for Alignment-RD-02 | 4d | 2026-12-14 | 2026-12-17 | PRO-R25-SL-DL-100, ENG-SH-SL-A-110, ENG-MS-SL-A-110, ENG-MT-SL-ML-A-100, PRO-SL-1DL-100, MS-CS-SL SS, MS-MM-130, MS-MM-140, CO-MV-ML-330, CO-IR-ML-230, CO-PW-ML-190, CO-PW-FH-220, CO-SW-ML-190, CO-SW-MH-300, CO-SD-CB-230, CO-SD-ML-190, CO-SD-MH-300, CO-EW-220, ENG-MT-SL-A-100, CON-LV-DP-160 | 4d |
| CO-SL-CL-330 |  | Trench Backfilling and Compaction Works for Street Lighting Network for Alignment-RD-02 | 3d | 2026-12-19 | 2026-12-21 | CO-SL-CL-320 | 4d |
|  | DPB | **Distrubution Panel Boards** |  | 2026-12-27 | 2027-01-06 |  |  |
| CO-SL-DB-330 |  | Installation Works for Panel Board Concrete Foundations of Street Lighting Network for Alignment-RD-02 | 3d | 2026-12-27 | 2026-12-29 | PRO-R25-SL-DL-160, CO-SL-LP-430, CO-SL-CL-330, ENG-MT-SL-DB-A-100, MS-CS-SL SS, CO-EW-220, MS-MM-130, MS-MM-140 | 0d |
| CO-SL-DB-340 |  | Installation Works for Lighting Panel Boards of Street Lighting Network for Alignment-RD-02 | 7d | 2026-12-30 | 2027-01-06 | CO-SL-DB-330 | 0d |
|  | TE | **Telecom and Light Current Network** |  | 2026-12-07 | 2027-01-18 |  |  |
|  | PD | **Ducts Works** |  | 2027-01-07 | 2027-01-18 |  |  |
| CO-TE-DW-190 |  | Pipes Laying Works for Ducts of Telecom Network for Alignment-RD-02 | 5d | 2027-01-07 | 2027-01-12 | PRO-R25-TE-DL-100, ENG-SH-TE-A-110, ENG-MS-TE-A-110, ENG-MT-TE-A-100, PRO-TE-1DL-100, MS-CS-TE SS, MS-MM-130, MS-MM-140, CO-SD-MH-300, CO-SD-ML-190, CO-SD-CB-230, CO-SW-MH-300, CO-SW-ML-190, CO-PW-ML-190, CO-PW-VC-280, CO-PW-FH-220, CO-IR-ML-230, CO-MV-ML-330, CON-LV-ML-180, CON-LV-HC-180, CO-SL-LP-430, CO-SL-CL-330, CO-EW-220, CO-SL-DB-340 | 0d |
| CO-TE-DW-200 |  | Trench Backfilling and Compaction Works for Ducts of Telecom Network for Alignment-RD-02 | 5d | 2027-01-13 | 2027-01-18 | CO-TE-MH-220 FF, CO-TE-DW-190 | 0d |
|  | MH | **Manholes Works** |  | 2026-12-07 | 2026-12-16 |  |  |
| CO-TE-MH-200 |  | Excavation Works for Manholes of Telecom Network for Alignment-RD-02 | 3d | 2026-12-07 | 2026-12-09 | ENG-SH-TE-A-110, ENG-MS-TE-A-110, ENG-MT-TE-A-110, PRO-TE-1DL-110, MS-CS-TE SS, MS-MM-130, MS-MM-140, ENG-MT-TE-A-100, PRO-TE-1DL-100, CO-SD-MH-300, CO-SD-ML-190, CO-SD-CB-230, CO-SW-MH-300, CO-SW-ML-190, CO-PW-ML-190, CO-PW-VC-280, CO-PW-FH-220, CO-IR-ML-230, CO-MV-ML-330, CO-EW-220 | 25d |
| CO-TE-MH-210 |  | Installation Works for Manholes of Telecom Network for Alignment-RD-02 | 3d | 2026-12-10 | 2026-12-13 | CO-TE-MH-200, PRO-R25-TE-DL-110 | 25d |
| CO-TE-MH-220 |  | Backfilling Works for Manholes of Telecom Network for Alignment-RD-02 | 3d | 2026-12-14 | 2026-12-16 | CO-TE-MH-210 | 25d |
|  | DD | **CCTV, Telephone, MSN, ACs System Works** |  | 2026-12-17 | 2026-12-23 |  |  |
| CO-TE-CTV-180 |  | Installation of CCTV, Telephone, ACS and MSN Systems Cables for Alignment-RD-02 | 6d | 2026-12-17 | 2026-12-23 | PRO-R25-CTV-DL-100, CO-TE-CTV-210, CO-TE-MH-220, ENG-SH-MSN-A-120, ENG-SH-CTV-A-110, ENG-MS-CTV-A-110, ENG-MT-CTV-A-100, PRO-CTV-1DL-100, MS-CS-TE SS, MS-MM-130, MS-MM-140, CO-TE-MH-250, CO-TE-MH-160 | 36d |
|  | RD | **Road Works** |  | 2026-12-29 | 2027-01-27 |  |  |
|  | RD | **Roads Works** |  |  |  |  |  |
|  | LS | **Pavement Works** |  | 2026-12-29 | 2027-01-13 |  |  |
| CO-RD-PV-200 |  | Fixing of Curbstone for Sidewalks Pavement for Alignment-RD-02 | 5d | 2026-12-29 | 2027-01-03 | ENG-MS-HS-A-10, PRO-R25-RD-DL-130, PRO-RD-1DL-150, PRO-R25-RD-DL-110, PRO-RD-1DL-110, CO-EW-220, CO-SD-ML-190, CO-SD-MH-300, CO-SD-CB-230, CO-SW-ML-190, CO-SW-MH-300, CO-PW-ML-190, CO-PW-VC-280, CO-IR-ML-230, CO-TSE-ML-280, CO-MV-ML-330, CO-SL-LP-430, CO-SL-CL-330, ENG-MS-RD-A-20, ENG-MS-RD-A-30, ENG-MS-RD-A-40, PRO-R25-RD-DL-100, CON-LV-HC-180, CON-LV-ML-180, ENG-MS-RD-A-10, ENG-SH-RD-A-100, ENG-SH-RD-A-110, MS-CS-RD SS, PRO-RD-1DL-100, MS-MM-130, MS-MM-140, CO-PW-FH-220, CO-TE-MH-220, CON-LV-DP-180 | 15d |
| CO-RD-PV-210 |  | Fixing of Interlock Tiles for Sidewalks Pavement for Alignment-RD-02 | 9d | 2027-01-04 | 2027-01-13 | CO-RD-PV-200, ENG-MS-HS-A-10, PRO-R25-RD-DL-120, PRO-RD-1DL-140 | 15d |
|  | TS | **Traffic Signs Boards and Roads Marking** |  | 2027-01-19 | 2027-01-27 |  |  |

| ID | WBS | Task | Duration | Start | Finish | Predecessors | Total float |
| --- | --- | --- | --- | --- | --- | --- | --- |
| CO-RD-F-RM-200 |  | Application of Road Marking Works For Road Works for Alignment-RD-02 | 4d | 2027-01-19 | 2027-01-23 | CO-RD-PV-210, ENG-MS-MRK-A-10, PRO-R25-RD-DL-150, ENG-SH-MRK-A-110, PRO-RD-1DL-170, CO-RD-PV-200, PRO-R25-RD-DL-110, PRO-RD-1DL-110, CO-EW-220, CO-SD-ML-190, CO-SD-MH-300, CO-SD-CB-230, CO-SW-ML-190, CO-SW-MH-300, CO-PW-ML-190, CO-PW-VC-280, CO-IR-ML-230, CO-TSE-ML-280, CO-MV-ML-330, CO-SL-LP-430, CO-SL-CL-330, ENG-MS-RD-A-20, ENG-MS-RD-A-30, ENG-MS-RD-A-40, PRO-R25-RD-DL-100, CON-LV-HC-180, CON-LV-ML-180, ENG-MS-RD-A-10, ENG-SH-RD-A-100, ENG-SH-RD-A-110, MS-CS-RD SS, PRO-RD-1DL-100, MS-MM-130, MS-MM-140, CO-TE-DW-200, CO-PW-FH-220, CO-TE-MH-220, CON-LV-DP-180 | 11d |
| CO-RD-F-TS-140 |  | Installation Works of Traffic Signs Boards For Road Works for Alignment-RD-02 | 4d | 2027-01-24 | 2027-01-27 | CO-RD-F-RM-200, ENG-MS-TSB-A-10, PRO-R25-RD-DL-140, ENG-SH-TSB-A-100, PRO-RD-1DL-160 | 11d |
|  | 3 | **Finishes for Infrastructure Networks** |  | 2026-12-07 | 2027-02-10 |  |  |
|  | 11 | **Storm Drainage Network** |  | 2027-01-07 | 2027-02-10 |  |  |
|  | TF | **Testing and Finishes** |  | 2027-01-07 | 2027-02-10 |  |  |
| CO-SD-ML-TF-120 |  | Testing Work for Pipes of Storm Drainage Network for Alignment-RD-02 | 6d | 2027-01-07 | 2027-01-13 | CO-SD-ML-190, CO-SD-PO-110-P1, CO-SD-PO-110-P2, CO-SD-ML-TF-130 | 10d |
| CO-SD-CB-TF-220 |  | Catch Basin Internal Finishes (Benching ) for Storm Drainage Network for Alignment-RD-02 | 6d | 2027-01-19 | 2027-01-25 | CO-SD-CB-230, CO-SD-MH-300, PRO-SD-1DL-140, PRO-R25-SD-DL-140, PRO-R25-RD-DL-110, PRO-RD-1DL-110, CO-EW-220, CO-SD-ML-190, CO-SW-ML-190, CO-SW-MH-300, CO-PW-ML-190, CO-PW-VC-280, CO-IR-ML-230, CO-TSE-ML-280, CO-MV-ML-330, CO-SL-LP-430, CO-SL-CL-330, ENG-MS-RD-A-20, ENG-MS-RD-A-30, ENG-MS-RD-A-40, PRO-R25-RD-DL-100, CON-LV-HC-180, CON-LV-ML-180, ENG-MS-RD-A-10, ENG-SH-RD-A-100, ENG-SH-RD-A-110, MS-CS-RD SS, PRO-RD-1DL-100, MS-MM-130, MS-MM-140, CO-TE-DW-200, CO-PW-FH-220, CO-TE-MH-220, CON-LV-DP-180 | 0d |
| CO-SD-MH-TF-250 |  | Testing Works for Manholes of Storm Drainage Network for Alignment-RD-02 | 6d | 2027-01-19 | 2027-01-25 | CO-SD-MH-300, CO-SD-ML-TF-120, PRO-SD-1DL-140, PRO-R25-SD-DL-140, PRO-R25-RD-DL-110, PRO-RD-1DL-110, CO-EW-220, CO-SD-ML-190, CO-SD-CB-230, CO-SW-ML-190, CO-SW-MH-300, CO-PW-ML-190, CO-PW-VC-280, CO-IR-ML-230, CO-TSE-ML-280, CO-MV-ML-330, CO-SL-LP-430, CO-SL-CL-330, ENG-MS-RD-A-20, ENG-MS-RD-A-30, ENG-MS-RD-A-40, PRO-R25-RD-DL-100, CON-LV-HC-180, CON-LV-ML-180, ENG-MS-RD-A-10, ENG-SH-RD-A-100, ENG-SH-RD-A-110, MS-CS-RD SS, PRO-RD-1DL-100, MS-MM-130, MS-MM-140, CO-TE-DW-200, CO-PW-FH-220, CO-TE-MH-220, CON-LV-DP-180, CO-SD-ML-TF-130, CO-SD-MH-TF-210, CO-SD-MH-220, PRO-SD-1DL-100, CO-SD-MH-200, PRO-R25-SD-DL-100, CO-SD-MH-190, ENG-MT-SD-ML-A-100, MS-CS-SD SS, CO-EW-230, ENG-MS-SD-ML-A-110, ENG-MT-SD-ML-A-110, ENG-SH-SD-ML-A-110, CO-SD-MH-180, CO-SD-MH-260, PRO-R25-RD-DL-170, PRO-RD-1DL-130, CO-TE-MH-190, CO-TE-DW-160, CO-SL-CL-300, CO-SL-LP-380, CON-LV-HC-150, CON-LV-ML-150, CO-MV-ML-300, CO-IR-ML-180, CO-PW-FH-190, CO-PW-VC-250, CO-PW-ML-160, CO-TSE-ML-230, CO-SW-ML-160, CO-SW-MH-250, CO-SD-CB-200, CO-SD-ML-160, CO-EW-210_R, CO-SL-LP-520, CO-RD-PB-150 SS, CO-IR-TF-210, CO-TE-CTV-210, CO-SD-ML-220, CO-PW-ML-220, CO-PW-VC-310, CO-TSE-ML-330, CO-MV-ML-360, CO-SL-LP-480, CO-SL-CL-360, CON-LV-HC-210, CON-LV-ML-210, CO-TE-DW-240, CO-PW-FH-250, CO-TE-MH-250, CO-RD-PB-140, CO-IR-ML-380, CO-SD-ML-130, PRO-R25-SD-DL-110, PRO-R25-SD-DL-130, PRO-SD-1DL-130, PRO-SD-1DL-120, ENG-MT-SD-CB-A-110, ENG-SH-SD-CB-A-110, ENG-MS-SD-CB-A-110, PRO-SW-1DL-110 SS, ENG-MT-SW-ML-A-100, ENG-SH-SW-ML-A-110, MS-CS-SW SS, ENG-MS-SW-ML-A-110, PRO-SW-1DL-100, ENG-MT-SW-ML-A-110, PRO-LV-DP-1DL-100, PRO-LV-DP-DL-100, CON-LV-DP-120, CON-LV-DP-190, CON-LV-DP-110, ENG-SH-MSN-A-120, ENG-SH-CTV-A-110, ENG-MS-CTV-A-110, ENG-MT-CTV-A-100, PRO-CTV-1DL-100, MS-CS-TE SS, CO-TE-MH-160, CO-TE-CTV-110 | 14d |
| CO-SD-CB-TF-200 |  | Testing Works for Catch Basins of Storm Drainage Network for Alignment-RD-02 | 6d | 2027-01-26 | 2027-02-01 | CO-SD-CB-230, CO-SD-ML-TF-120, CO-SD-CB-TF-220 | 0d |
| CO-SD-CB-TF-210 |  | Install Catch Basin Cover Works for External Finishes of Storm Drainage Network for Alignment-RD-02 | 8d | 2027-02-02 | 2027-02-10 | CO-SD-CB-TF-220, PRO-SD-1DL-150, PRO-R25-SD-DL-150, CO-SD-CB-230, CO-SD-CB-TF-200, PRO-R25-RD-DL-110, PRO-RD-1DL-110, CO-EW-220, CO-SD-ML-190, CO-SD-MH-300, CO-SW-ML-190, CO-SW-MH-300, CO-PW-ML-190, CO-PW-VC-280, CO-IR-ML-230, CO-TSE-ML-280, CO-MV-ML-330, CO-SL-LP-430, CO-SL-CL-330, ENG-MS-RD-A-20, ENG-MS-RD-A-30, ENG-MS-RD-A-40, PRO-R25-RD-DL-100, CON-LV-HC-180, CON-LV-ML-180, ENG-MS-RD-A-10, ENG-SH-RD-A-100, ENG-SH-RD-A-110, MS-CS-RD SS, PRO-RD-1DL-100, MS-MM-130, MS-MM-140, CO-TE-DW-200, CO-PW-FH-220, CO-TE-MH-220, CON-LV-DP-180 | 0d |
|  | 10 | **Sewage Network** |  | 2026-12-26 | 2027-01-14 |  |  |
|  | TF | **Testing and Finishes** |  | 2026-12-26 | 2027-01-14 |  |  |
| CO-SW-TF-270 |  | Final Testing For Main Line of Sewage Network for Alignment-RD-02 | 18d | 2026-12-26 | 2027-01-14 | CO-SW-ML-190, PRO-SW-1DL-110, PRO-R25-SW-DL-110, ENG-MT-SW-ML-A-100, ENG-SH-SW-ML-A-110, MS-CS-SW SS, CO-EW-200, MS-MM-130, MS-MM-140, ENG-MS-SW-ML-A-110, CO-SD-MH-220, CO-SD-ML-130, PRO-R25-SD-DL-110, PRO-R25-SD-DL-130, PRO-SD-1DL-130, PRO-SD-1DL-120, ENG-MT-SD-CB-A-110, ENG-SH-SD-CB-A-110, ENG-MS-SD-CB-A-110, MS-CS-SD SS, PRO-SW-1DL-100, PRO-R25-SW-DL-100, ENG-MT-SW-ML-A-110, PRO-SD-1DL-140, PRO-R25-SD-DL-140, CO-SD-MH-260, PRO-R25-RD-DL-170, PRO-RD-1DL-130, PRO-R25-RD-DL-100, PRO-RD-1DL-100, MS-CS-RD SS, ENG-SH-RD-A-100, ENG-SH-RD-A-110, ENG-MS-RD-A-30, ENG-MS-RD-A-20, ENG-MS-RD-A-10, ENG-MS-RD-A-40, CO-TE-MH-190, CO-TE-DW-160, CO-SL-CL-300, CO-SL-LP-380, CON-LV-HC-150, CON-LV-ML-150, CO-MV-ML-300, CO-IR-ML-180, CO-PW-FH-190, CO-PW-VC-250, CO-PW-ML-160, CO-TSE-ML-230, CO-SW-ML-160, CO-SW-MH-250, CO-SD-CB-200, CO-SD-ML-160, CO-EW-210_R, CO-SL-LP-520, PRO-SW-1DL-110 SS, CO-EW-230, PRO-SD-1DL-100, CO-SD-MH-200, PRO-R25-SD-DL-100, CO-SD-MH-190, ENG-MT-SD-ML-A-100, ENG-MS-SD-ML-A-110, ENG-MT-SD-ML-A-110, ENG-SH-SD-ML-A-110, CO-SD-MH-180, CO-SD-ML-220 | 23d |
| CO-SW-TF-290 |  | Testing Works for Main Line Manholes of Sewage Network for Alignment-RD-02 | 18d | 2026-12-26 | 2027-01-14 | CO-SW-MH-300, CO-SW-ML-190, PRO-SW-1DL-110, PRO-R25-SW-DL-110, ENG-MT-SW-ML-A-100, ENG-SH-SW-ML-A-110, MS-CS-SW SS, CO-EW-200, MS-MM-130, MS-MM-140, ENG-MS-SW-ML-A-110, CO-SD-MH-220, CO-SD-ML-130, PRO-R25-SD-DL-110, PRO-R25-SD-DL-130, PRO-SD-1DL-130, PRO-SD-1DL-120, ENG-MT-SD-CB-A-110, ENG-SH-SD-CB-A-110, ENG-MS-SD-CB-A-110, MS-CS-SD SS, PRO-SW-1DL-100, PRO-R25-SW-DL-100, ENG-MT-SW-ML-A-110, PRO-SD-1DL-140, PRO-R25-SD-DL-140, CO-SD-MH-260, PRO-R25-RD-DL-170, PRO-RD-1DL-130, PRO-R25-RD-DL-100, PRO-RD-1DL-100, MS-CS-RD SS, ENG-SH-RD-A-100, ENG-SH-RD-A-110, ENG-MS-RD-A-30, ENG-MS-RD-A-20, ENG-MS-RD-A-10, ENG-MS-RD-A-40, CO-TE-MH-190, CO-TE-DW-160, CO-SL-CL-300, CO-SL-LP-380, CON-LV-HC-150, CON-LV-ML-150, CO-MV-ML-300, CO-IR-ML-180, CO-PW-FH-190, CO-PW-VC-250, CO-PW-ML-160, CO-TSE-ML-230, CO-SW-ML-160, CO-SW-MH-250, CO-SD-CB-200, CO-SD-ML-160, CO-EW-210_R, CO-SL-LP-520, PRO-SW-1DL-110 SS, CO-EW-230, PRO-SD-1DL-100, CO-SD-MH-200, PRO-R25-SD-DL-100, CO-SD-MH-190, ENG-MT-SD-ML-A-100, ENG-MS-SD-ML-A-110, ENG-MT-SD-ML-A-110, ENG-SH-SD-ML-A-110, CO-SD-MH-180, CO-SD-ML-220 | 23d |
|  | 9 | **Potable Water Network** |  | 2026-12-22 | 2027-01-25 |  |  |
|  | TF | **Testing and Finishes** |  | 2026-12-22 | 2027-01-25 |  |  |
| CO-PW-TF-170 |  | Fire Hydrant Finishies (S.Box + Safety + Marker Post ) of Potable Water Network for Alignment-RD-02 | 14d | 2026-12-22 | 2027-01-06 | CO-PW-FH-220, ENG-MT-PW-TF-A-100, CO-PW-TF-200 SS | 14d |
| CO-PW-TF-180 |  | Final Finishes works and Covers for Valves and Valve Chambers for Alignment-RD-02 | 8d | 2027-01-07 | 2027-01-16 | CO-PW-VC-280, ENG-MT-PW-TF-A-100, PRO-PW-1DL-130, PRO-R25-PW-DL-130, CO-PW-TF-170, CO-PW-TF-210 | 14d |
| CO-PW-TF-160 |  | Testing of Potable Water Network for Alignment-RD-02 | 8d | 2027-01-17 | 2027-01-25 | CO-PW-ML-190, CO-PW-TF-180, CO-PW-TF-190, CO-IR-ML-240, CO-IR-ML-190, ENG-MT-IR-ML-A-110, PRO-IR-1DL-110, PRO-R25-IR-DL-110, PRO-IR-1DL-100, CO-PW-ML-110, PRO-R25-IR-DL-100, ENG-SH-IR-ML-A-110, ENG-MS-IR-ML-A-110, ENG-MT-IR-ML-A-100, CO-PW-ML-100, MS-CS-IR SS, CO-EW-200, MS-MM-130, MS-MM-140, CO-IR-ML-170, CO-IR-ML-160, CO-EW-240, CO-IR-ML-150, CO-SW-MH-250, CO-SW-MH-240, CO-SW-MH-230, PRO-SW-1DL-110, PRO-R25-SW-DL-110, CO-SW-MH-220, ENG-MT-SW-ML-A-100, ENG-SH-SW-ML-A-110, MS-CS-SW SS, ENG-MS-SW-ML-A-110, CO-SD-MH-380, CO-SD-ML-250, CO-SW-MH-210, CO-SD-CB-200, PRO-R25-SD-DL-110, PRO-R25-SD-DL-130, PRO-SD-1DL-130, PRO-SD-1DL-120, CO-SD-CB-190, ENG-MT-SD-CB-A-110, ENG-SH-SD-CB-A-110, ENG-MS-SD-CB-A-110, MS-CS-SD SS, CO-SD-CB-180, CO-SW-ML-160, PRO-SW-1DL-100, PRO-R25-SW-DL-100, CO-SW-ML-150, ENG-MT-SW-ML-A-110, CO-SW-ML-140 | 14d |
|  | 13 | **Irrigation Network** |  | 2027-01-03 | 2027-01-06 |  |  |
|  | TF | **Testing and Finishes** |  | 2027-01-03 | 2027-01-06 |  |  |
| CO-IR-TF-180 |  | Final Testing (pressure tests) of Irrigation Network for Alignment-RD-02 | 4d | 2027-01-03 | 2027-01-06 | CO-IR-ML-240, CO-IR-TF-210, CO-PW-TF-110, CO-PW-TF-130, ENG-MT-IR-ML-A-110, PRO-IR-1DL-110, PRO-R25-IR-DL-110, PRO-IR-1DL-100, CO-PW-ML-110, PRO-R25-IR-DL-100, ENG-SH-IR-ML-A-110, ENG-MS-IR-ML-A-110, ENG-MT-IR-ML-A-100, CO-PW-ML-100, MS-CS-IR SS, CO-EW-200, MS-MM-130, MS-MM-140 | 30d |
|  | 1 | **Treated Sewage Effluent (Tse)** |  | 2027-01-18 | 2027-01-24 |  |  |
|  | TF | **Testing and Finishes** |  | 2027-01-18 | 2027-01-24 |  |  |
| CO-TSE-TF-190 |  | Final Testing (pressure tests) of Treated Sewage Effluent (Tse) for Alignment-RD-02 | 6d | 2027-01-18 | 2027-01-24 | CO-TSE-ML-280, CO-TSE-TF-200 | 15d |
|  | 14 | **Medium Voltage Network** |  | 2026-12-07 | 2026-12-13 |  |  |
|  | TT | **Termination and Testing Works** |  | 2026-12-07 | 2026-12-13 |  |  |
| CO-MV-TF-240 |  | Testing and Termination Works of Medium Voltage Network for Alignment-RD-02 | 6d | 2026-12-07 | 2026-12-13 | CO-MV-ML-330, CO-MV-TF-250 | 11d |
|  | 6 | **Low Voltage Network** |  | 2026-12-27 | 2027-01-04 |  |  |
|  | TT | **Termination and Testing Works** |  | 2026-12-27 | 2027-01-04 |  |  |
| CON-LV-TT-150 |  | Testing and Termination Works for Distribution Pillars Units of Low Voltage Network for Alignment-RD-02 | 4d | 2026-12-27 | 2026-12-30 | PRO-LV-TT-1DL-100, PRO-LV-TT-DL-100, CON-LV-DP-180, CON-LV-TT-110, CO-MV-TF-250, PRO-LV-DP-1DL-100, PRO-LV-DP-DL-100, CON-LV-DP-120, CON-LV-DP-190, CON-LV-DP-110 | 32d |
| CON-LV-TT-140 |  | Testing and Termination Works for Substation Low Voltage Panel Boards of Low Voltage Network for Alignment-RD-02 | 4d | 2026-12-31 | 2027-01-04 | CON-LV-TT-150, PRO-LV-TT-1DL-100, PRO-LV-TT-DL-100, CON-LV-HC-180, CON-LV-ML-180 | 32d |
|  | 1 | **Earthing System Works** |  | 2026-12-31 | 2027-01-02 |  |  |
| CON-LV-ES-120 |  | Earthing System Works for Distribution Pillars Units of Low Voltage Network for Alignment-RD-02 | 2d | 2026-12-31 | 2027-01-02 | CON-LV-TT-150, PRO-LV-DP-1DL-110, PRO-LV-DP-DL-120, CON-LV-DP-180, CON-LV-ES-100, PRO-LV-DP-1DL-100, PRO-LV-DP-DL-100, CON-LV-DP-120, CON-LV-DP-190, CON-LV-DP-110, PRO-LV-TT-1DL-100, PRO-LV-TT-DL-100, CON-LV-TT-110, CO-MV-TF-250 | 34d |
|  | 12 | **Street Lighting Network** |  | 2026-12-30 | 2027-01-17 |  |  |
|  | TR | **Termination and Testing Works** |  | 2026-12-30 | 2027-01-17 |  |  |
| CO-SL-LP-420 |  | Installation Works for Lighting Fixtures With Drop Wire of Street Lighting Network for Alignment-RD-02 | 2d | 2026-12-30 | 2026-12-31 | CO-SL-DB-340 SS, CO-SL-LP-430, ENG-MT-SL-A-120, PRO-R25-SL-DL-140, CO-TE-CTV-210, CO-TE-CTV-110 | 21d |
| CO-SL-TF-440 |  | Termination Works For Panel Board Cables of Street Lighting Network for Alignment-RD-02 | 6d | 2027-01-07 | 2027-01-13 | CO-SL-DB-340, CO-SL-LP-420, PRO-R25-SL-DL-170, CO-SL-LP-470, CO-SL-ES-290, CO-SL-LP-370, CO-SL-ES-250, PRO-R25-SL-DL-160 SS, CO-SL-LP-380, CO-SL-CL-300, ENG-MT-SL-DB-A-100, MS-CS-SL SS, CO-EW-210_R, MS-MM-130, MS-MM-140, CO-SL-LP-580, CO-SL-ES-330, PRO-R25-SL-DL-160, CO-SL-LP-570, CO-SL-CL-420, CO-EW-200, CO-SL-LP-480, CO-SL-CL-360, CO-EW-230 | 24d |
| CO-SL-TF-450 |  | Testing Works for Lighting Poles of Street Lighting Network for Alignment-RD-02 | 2d | 2027-01-16 | 2027-01-17 | CO-SL-DB-340, CO-SL-LP-420, CO-SL-ES-270, PRO-R25-SL-DL-130, CO-SL-TF-490 SS | 21d |
| CO-SL-TF-460 |  | Testing Works For Panel Board Cables of Street Lighting Network for Alignment-RD-02 | 2d | 2027-01-16 | 2027-01-17 | CO-SL-DB-340, CO-SL-LP-420, CO-SL-ES-270, CO-SL-LP-470, CO-SL-ES-290, CO-SL-LP-370, CO-SL-ES-250, PRO-R25-SL-DL-160 SS, CO-SL-LP-380, CO-SL-CL-300, ENG-MT-SL-DB-A-100, MS-CS-SL SS, CO-EW-210_R, MS-MM-130, MS-MM-140, CO-SL-LP-580, CO-SL-ES-330, PRO-R25-SL-DL-160, CO-SL-LP-570, CO-SL-CL-420, CO-EW-200, CO-SL-LP-480, CO-SL-CL-360, CO-EW-230 | 21d |
|  | ES | **Earthing System Works** |  | 2027-01-02 | 2027-01-14 |  |  |
| CO-SL-ES-260 |  | Install Earthing System Works for Lighting Poles of Street Lighting Network for Alignment-RD-02 | 6d | 2027-01-02 | 2027-01-07 | CO-SL-LP-420, ENG-MT-SL-ES-A-100, PRO-R25-SL-DL-150, CO-SL-ES-280 | 21d |
| CO-SL-ES-270 |  | Install Earthing System Works for Lighting Panel Boards of Street Lighting Network for Alignment-RD-02 | 6d | 2027-01-09 | 2027-01-14 | CO-SL-ES-260, PRO-R25-SL-DL-150, CO-SL-ES-290 | 21d |
|  | 3 | **Telecom and Light Current Network** |  | 2026-12-31 | 2027-01-06 |  |  |
|  | 1 | **Testing and Finishes** |  | 2026-12-31 | 2027-01-06 |  |  |
| CO-TE-CTV-TF-220 |  | Testing and Interface modules with Telecom for Alignment-RD-02 | 3d | 2026-12-31 | 2027-01-03 | CO-TE-CTV-TF-260, CO-TE-CTV-TF-340, CO-TE-CTV-180, CO-TE-CTV-210, CO-TE-CTV-110 | 30d |
| CO-TE-CTV-TF-350 |  | Testing and Interface modules with CCTV, Telephone, MSN and Access Control for Alignment-RD-02 | 3d | 2027-01-04 | 2027-01-06 | CO-TE-CTV-TF-260, CO-TE-CTV-TF-340, CO-TE-CTV-TF-220, CO-TE-CTV-180, CO-TE-CTV-210, CO-TE-CTV-110 | 30d |
|  | 3 | **Alignment-RD-03-1** |  | 2026-06-23 | 2027-01-10 |  |  |
|  | EW | **Earthworks** |  | 2026-06-23 | 2026-07-06 |  |  |
|  | EW | **Earthworks** |  | 2026-06-23 | 2026-07-06 |  |  |
| CO-EW-200 |  | Excavation and Backfilling Works Upto Design Level for Earthworks for Alignment-RD-03-1 | 12d | 2026-06-23 | 2026-07-06 | MS-CS-PS SS, MOB-30, MOB-20, MOB-80, MOB-40, MOB-50, MOB-60, MOB-10, MOB-70, PRE-CON-MDC-10, PRE-CON-MDC-20, PRE-CON-MDC-30, PRE-CON-MDC-40, PRE-CON-MDC-50, PRE-CON-MDC-60, PRE-CON-MDC-70, PRE-CON-MDC-80, MS-MM-100, MS-MM-130, MS-MM-140, MS-MM-150 | 3d |
|  | SD | **Storm Drainage Network** |  | 2026-07-07 | 2026-08-20 |  |  |
|  | MH | **Manholes** |  | 2026-07-07 | 2026-08-13 |  |  |
| CO-SD-MH-180 |  | Trench Excavation and Bedding Works for Manholes of Storm Drainage Network for Alignment-RD-03-1 | 10d | 2026-07-07 | 2026-07-18 | ENG-MT-SD-ML-A-100, MS-CS-SD SS, CO-EW-200, ENG-MS-SD-ML-A-110, ENG-MT-SD-ML-A-110, ENG-SH-SD-ML-A-110, MS-MM-130, MS-MM-140 | 6d |
| CO-SD-MH-190 |  | Install RC Footing Works for Manholes of Storm Drainage Network for Alignment-RD-03-1 | 3d | 2026-07-19 | 2026-07-21 | CO-SD-MH-180, PRO-R25-SD-DL-100 FF, PRO-SD-1DL-100 | 6d |
| CO-SD-MH-200 |  | Install RC Wall Rings & Slab Works for Manholes of Storm Drainage Network for Alignment-RD-03-1 | 10d | 2026-07-22 | 2026-08-02 | CO-SD-MH-190, PRO-SD-1DL-100 | 6d |
| CO-SD-MH-220 |  | Backfilling Works for Manholes of Storm Drainage Network for Alignment-RD-03-1 | 10d | 2026-08-03 | 2026-08-13 | CO-SD-MH-200 | 6d |
|  | ML | **Main Line Sections** |  | 2026-08-03 | 2026-08-20 |  |  |
| CO-SD-ML-100 |  | Trench Excavation and Bedding Works for Main Lines of Storm Drainage Network for Alignment-RD-03-1 | 3d | 2026-08-03 | 2026-08-05 | CO-EW-200, ENG-SH-SD-ML-A-110, ENG-MS-SD-ML-A-110, ENG-MT-SD-ML-A-110, MS-CS-SD SS, MS-MM-130, MS-MM-140, CO-SD-MH-200, CO-SD-MH-180 SS, CO-SD-MH-180 FF, MS-CS-SD FF | 6d |
| CO-SD-ML-120 |  | Pipes Laying Works for Main Lines of Storm Drainage Network for Alignment-RD-03-1 | 3d | 2026-08-13 | 2026-08-16 | CO-SD-ML-100, PRO-R25-SD-DL-120 FF, PRO-SD-1DL-110, CO-SD-MH-200 | 0d |
| CO-SD-ML-130 |  | Trench Backfilling and Compaction Works for Main Lines of Storm Drainage Network for Alignment-RD-03-1 | 4d | 2026-08-17 | 2026-08-20 | CO-SD-ML-120, CO-SD-MH-220 FF | 0d |
|  | CB | **Catch Basin Sections** |  |  |  |  |  |
|  | SW | **Sewage Network** |  |  |  |  |  |
|  | 1 | **Manholes** |  |  |  |  |  |
|  | ML | **Main Line Sections** |  |  |  |  |  |
|  | TSE | **Treated Sewage Effluent (Tse)** |  | 2026-08-24 | 2027-01-09 |  |  |
| CO-TSE-ML-150 |  | Trench Excavation and Bedding Works for Main Lines of Treated Sewage Effluent (Tse) for Alignment-RD-03-1 | 4d | 2026-08-24 | 2026-08-27 | ENG-SH-TSE-ML-A-120, ENG-MS-TSE-ML-A-120, ENG-MT-IR-ML-A-120, MS-CS-TSE SS, CO-EW-200, MS-MM-130, MS-MM-140, PRO-SW-1DL-110, PRO-R25-SW-DL-110, ENG-MT-SW-ML-A-100, ENG-SH-SW-ML-A-110, MS-CS-SW SS, ENG-MS-SW-ML-A-110, CO-SD-MH-220, CO-SD-ML-130, PRO-R25-SD-DL-110, PRO-R25-SD-DL-130, PRO-SD-1DL-130, PRO-SD-1DL-120, ENG-MT-SD-CB-A-110, ENG-SH-SD-CB-A-110, ENG-MS-SD-CB-A-110, MS-CS-SD SS, PRO-SW-1DL-100, PRO-R25-SW-DL-100, ENG-MT-SW-ML-A-110, MS-CS-TSE FF | 18d |
| CO-TSE-ML-160 |  | Pipes Laying Works for Main Lines of Treated Sewage Effluent (Tse) for Alignment-RD-03-1 | 4d | 2026-08-29 | 2026-09-01 | CO-TSE-ML-150, PRO-TSE-1DL-120, PRO-R25-TSE-DL-120 | 18d |
| CO-TSE-ML-170 |  | Installation Works for Main Line Valves of Treated Sewage Effluent (Tse) for Alignment-RD-03-1 | 6d | 2026-09-02 | 2026-09-08 | CO-TSE-ML-160 | 18d |
| CO-TSE-ML-190 |  | Installation Works for Valve and Washout Chambers of Treated Sewage Effluent (Tse) for Alignment-RD-03-1 | 6d | 2026-09-09 | 2026-09-15 | CO-TSE-ML-170 | 18d |

| ID | WBS | Task | Duration | Start | Finish | Predecessors | Total float |
| --- | --- | --- | --- | --- | --- | --- | --- |
| CO-TSE-ML-180 |  | Trench Backfilling and Compaction Works for Treated Sewage Effluent (Tse) for Alignment-RD-03-1 | 5d | 2026-09-16 | 2026-09-21 | CO-TSE-ML-190 | 18d |
|  | TA | **Treated Sewage Effluent (Tse) Storage Tank** |  | 2027-01-03 | 2027-01-09 |  |  |
| CO-TSE-TF-180 |  | Installation of Storage Tank of Treated Sewage Effluent (Tse) for Alignment-RD-03-1 | 6d | 2027-01-03 | 2027-01-09 | CO-PW-TF-130, CO-TSE-ML-180 | 15d |
|  | PW | **Potable Water Network** |  | 2026-09-22 | 2027-01-02 |  |  |
|  | ML | **Main Line Sections** |  | 2026-09-22 | 2026-10-19 |  |  |
| CO-PW-ML-100 |  | Trench Excavation and Bedding Works for Main Lines of Potable Water Network for Alignment-RD-03-1 | 5d | 2026-09-22 | 2026-09-28 | ENG-SH-PW-ML-A-110, ENG-MS-PW-ML-A-110, ENG-MT-PW-ML-A-100, MS-CS-PW SS, CO-EW-200, MS-MM-130, MS-MM-140, CO-TSE-ML-180, CO-PW-ML-140, PRO-SW-1DL-110, PRO-R25-SW-DL-110, ENG-MT-SW-ML-A-100, ENG-SH-SW-ML-A-110, MS-CS-SW SS, ENG-MS-SW-ML-A-110, CO-SD-MH-220, CO-SD-ML-130, PRO-R25-SD-DL-110, PRO-R25-SD-DL-130, PRO-SD-1DL-130, PRO-SD-1DL-120, ENG-MT-SD-CB-A-110, ENG-SH-SD-CB-A-110, ENG-MS-SD-CB-A-110, MS-CS-SD SS, PRO-SW-1DL-100, PRO-R25-SW-DL-100, ENG-MT-SW-ML-A-110, MS-CS-PW FF | 18d |
| CO-PW-ML-110 |  | Pipes Laying and accessories for Main Lines of Potable Water Network for Alignment-RD-03-1 | 5d | 2026-10-06 | 2026-10-11 | CO-PW-ML-100, PRO-PW-1DL-100, PRO-R25-PW-DL-100 | 12d |
| CO-PW-ML-130 |  | Trench Backfilling and Compaction Works for Main Lines of Potable Water Network for Alignment-RD-03-1 | 7d | 2026-10-12 | 2026-10-19 | CO-PW-ML-110 | 12d |
|  | VC | **Valve Chamber** |  | 2026-09-26 | 2026-11-05 |  |  |
| CO-PW-VC-170 |  | Excavation Works for Main Line Valves and Valve Chambers of Potable Water Network for Alignment-RD-03-1 | 3d | 2026-09-26 | 2026-09-28 | ENG-MT-PW-ML-A-110, MS-CS-PW SS, CO-PW-ML-100 SS, CO-PW-ML-100 FF, MS-MM-130, MS-MM-140 | 32d |
| CO-PW-VC180 |  | Installation of Valve Chambers of Potable Water Network for Alignment-RD-03-1 | 3d | 2026-10-03 | 2026-10-05 | CO-PW-VC-170, PRO-R25-PW-DL-120 | 29d |
| CO-PW-VC-190 |  | Installation Works for Valves of Potable Water Network for Alignment-RD-03-1 | 3d | 2026-10-31 | 2026-11-02 | CO-PW-VC180, PRO-PW-1DL-110, PRO-R25-PW-DL-110 | 8d |
| CO-PW-VC-220 |  | Backfilling Works for Main Line Valves and Valve Chambers of Potable Water Network for Alignment-RD-03-1 | 3d | 2026-11-03 | 2026-11-05 | CO-PW-VC-190, CO-PW-ML-130 FF | 8d |
|  | FH | **Fire Hydrant** |  | 2026-09-29 | 2026-11-05 |  |  |
| CO-PW-FH-140 |  | Excavation Works for Fire Hydrants of Potable Water Network for Alignment-RD-03-1 | 2d | 2026-09-29 | 2026-09-30 | CO-PW-VC-170, ENG-SH-PW-FH-A-110, ENG-MT-PW-FH-A-100, MS-CS-PW SS, CO-EW-200, MS-MM-130, MS-MM-140 | 35d |
| CO-PW-FH-150 |  | Installation Works for Fire Hydrant of Potable Water Network for Alignment-RD-03-1 | 2d | 2026-10-12 | 2026-10-13 | CO-PW-FH-140, PRO-PW-1DL-120, CO-PW-ML-110 | 26d |
| CO-PW-FH-160 |  | Trench Backfilling and Compaction Works for Fire Hydrants of Potable Water Network for Alignment-RD-03-1 | 2d | 2026-11-04 | 2026-11-05 | CO-PW-FH-150, CO-PW-VC-220 FF | 8d |
|  | TA | **Potable Water Network Storage Tank** |  | 2026-12-27 | 2027-01-02 |  |  |
| CO-PW-TF-130 |  | Installation of Storage Tank of Potable Water Network for Alignment-RD-03-1 | 6d | 2026-12-27 | 2027-01-02 | CO-PW-ML-130, CO-PW-TF-100 | 15d |
|  | IR | **Irrigation Network** |  |  |  |  |  |
|  | ML | **Main Line Pipes** |  |  |  |  |  |
|  | LV | **Low Voltage Network** |  | 2026-10-20 | 2026-12-06 |  |  |
|  | MLVC | **Main Low Voltage Cables Works ( Cable 300 MM )** |  | 2026-10-20 | 2026-11-10 |  |  |
| CON-LV-ML-100 |  | Trench Excavation and Bedding Works for Main Cable of Low Voltage Network for Alignment-RD-03-1 | 8d | 2026-10-20 | 2026-10-28 | CO-PW-ML-130, ENG-SH-LV-A-120, ENG-MS-MV-A-120, MS-CS-LV SS, CO-EW-200, MS-MM-130, MS-MM-140, CO-SD-ML-130, PRO-R25-SD-DL-110, PRO-R25-SD-DL-130, PRO-SD-1DL-130, PRO-SD-1DL-120, ENG-MT-SD-CB-A-110, ENG-SH-SD-CB-A-110, ENG-MS-SD-CB-A-110, MS-CS-SD SS, PRO-SW-1DL-110, PRO-R25-SW-DL-110, ENG-MT-SW-ML-A-100, ENG-SH-SW-ML-A-110, MS-CS-SW SS, ENG-MS-SW-ML-A-110, CO-SD-MH-220, PRO-SW-1DL-100, PRO-R25-SW-DL-100, ENG-MT-SW-ML-A-110, MS-CS-LV FF | 12d |
| CON-LV-ML-110 |  | Cable Laying Works for Main Cable of Low Voltage Network for Alignment-RD-03-1 | 7d | 2026-10-29 | 2026-11-05 | CON-LV-ML-100, PRO-LV-ML-1DL-100, PRO-LV-ML-DL-100 | 12d |
| CON-LV-ML-120 |  | Trench Backfilling and Compaction Works for Main Cable of Low Voltage Network for Alignment-RD-03-1 | 4d | 2026-11-07 | 2026-11-10 | CON-LV-ML-110 | 15d |
|  | SLVC | **Service Low Voltage Cables Works ( Cable 70 MM )** |  | 2026-11-07 | 2026-11-22 |  |  |
| CON-LV-HC-100 |  | Trench Excavation and Bedding Works for Service Cable of Low Voltage Network for Alignment-RD-03-1 | 4d | 2026-11-07 | 2026-11-10 | CON-LV-ML-100, ENG-MS-MV-A-120, MS-CS-LV SS, CO-EW-200, ENG-SH-LV-A-120, MS-MM-130, MS-MM-140, CO-PW-ML-130, CO-PW-VC-220, CO-PW-FH-160, CO-TSE-ML-180, CO-SD-ML-130, CO-SD-MH-220, PRO-R25-SD-DL-110, PRO-R25-SD-DL-130, PRO-SD-1DL-130, PRO-SD-1DL-120, ENG-MT-SD-CB-A-110, ENG-SH-SD-CB-A-110, ENG-MS-SD-CB-A-110, MS-CS-SD SS, PRO-SW-1DL-110, PRO-R25-SW-DL-110, ENG-MT-SW-ML-A-100, ENG-SH-SW-ML-A-110, MS-CS-SW SS, ENG-MS-SW-ML-A-110, PRO-SW-1DL-100, PRO-R25-SW-DL-100, ENG-MT-SW-ML-A-110 | 8d |
| CON-LV-HC-110 |  | Cable Laying Works for Service Cable of Low Voltage Network for Alignment-RD-03-1 | 7d | 2026-11-11 | 2026-11-18 | CON-LV-HC-100, CON-LV-ML-110, PRO-LV-HC-1DL-100, PRO-LV-HC-DL-100, PRO-LV-DP-DL-120 | 8d |
| CON-LV-HC-120 |  | Trench Backfilling and Compaction Works for Service Cable of Low Voltage Network for Alignment-RD-03-1 | 3d | 2026-11-19 | 2026-11-22 | CON-LV-HC-110, CON-LV-ML-120 | 8d |
|  | DP | **Distribution Pillars Works** |  | 2026-11-23 | 2026-12-06 |  |  |
| CON-LV-DP-100 |  | Foundation Excavation Works for Distribution Pillars of Low Voltage Network for Alignment-RD-03-1 | 4d | 2026-11-23 | 2026-11-26 | ENG-MS-MV-A-120, MS-CS-LV SS, CO-EW-200, MS-MM-130, MS-MM-140, CON-LV-HC-120 | 8d |
| CON-LV-DP-110 |  | Pouring Plain Concrete For Distribution Pillar Units of Low Voltage Network for Alignment-RD-03-1 | 4d | 2026-11-28 | 2026-12-01 | CON-LV-DP-100 | 8d |
| CON-LV-DP-120 |  | Installation Works for Distribution Pillar Units of Low Voltage Network for Alignment-RD-03-1 | 4d | 2026-12-02 | 2026-12-06 | CON-LV-DP-110, PRO-LV-DP-1DL-100, PRO-LV-DP-DL-100 | 8d |
|  | SL | **Street Lighting Network** |  | 2026-11-10 | 2026-12-02 |  |  |
|  | LP | **Lighting Poles Works** |  | 2026-11-10 | 2026-11-28 |  |  |
| CO-SL-LP-550 |  | Installation Works for Lighting Poles Foundation of Street Lighting Network for Alignment-RD-03-1 | 5d | 2026-11-10 | 2026-11-15 | PRO-R25-SL-DL-110, ENG-SH-SL-A-110, ENG-MS-SL-A-110, ENG-MT-SL-A-100, MS-CS-SL SS, MS-MM-130, MS-MM-140, CO-EW-200, CO-MV-ML-370 | 3d |
| CO-SL-LP-560 |  | Installation Works for Lighting Poles of Street Lighting Network for Alignment-RD-03-1 | 5d | 2026-11-16 | 2026-11-21 | CO-SL-LP-550, ENG-MT-SL-A-110, PRO-R25-SL-DL-120 | 3d |
| CO-SL-LP-570 |  | Backfilling Works for Lighting Poles of Street Lighting Network for Alignment-RD-03-1 | 6d | 2026-11-22 | 2026-11-28 | CO-SL-LP-560 | 7d |
|  | CW | **Cabling Works** |  | 2026-11-22 | 2026-12-02 |  |  |
| CO-SL-CL-410 |  | Cable Laying Works for Street Lighting Network for Alignment-RD-03-1 | 5d | 2026-11-22 | 2026-11-26 | PRO-R25-SL-DL-100, ENG-SH-SL-A-110, ENG-MS-SL-A-110, ENG-MT-SL-ML-A-100, PRO-SL-1DL-100, MS-CS-SL SS, MS-MM-130, MS-MM-140, CO-SL-LP-560, CO-SD-MH-220, CO-SD-ML-130, CO-TSE-ML-180, CO-PW-ML-130, CO-PW-VC-220, CO-PW-FH-160, CO-EW-200, PRO-R25-SD-DL-110, PRO-R25-SD-DL-130, PRO-SD-1DL-130, PRO-SD-1DL-120, ENG-MT-SD-CB-A-110, ENG-SH-SD-CB-A-110, ENG-MS-SD-CB-A-110, MS-CS-SD SS, PRO-SW-1DL-110, PRO-R25-SW-DL-110, ENG-MT-SW-ML-A-100, ENG-SH-SW-ML-A-110, MS-CS-SW SS, ENG-MS-SW-ML-A-110, PRO-SW-1DL-100, PRO-R25-SW-DL-100, ENG-MT-SW-ML-A-110, ENG-MT-IR-ML-A-110, PRO-IR-1DL-110, PRO-R25-IR-DL-110, PRO-IR-1DL-100, CO-PW-ML-110, PRO-R25-IR-DL-100, ENG-SH-IR-ML-A-110, ENG-MS-IR-ML-A-110, ENG-MT-IR-ML-A-100, CO-PW-ML-100, MS-CS-IR SS | 3d |
| CO-SL-CL-420 |  | Trench Backfilling and Compaction Works for Street Lighting Network for Alignment-RD-03-1 | 5d | 2026-11-28 | 2026-12-02 | CO-SL-CL-410, CO-SL-LP-570 FF | 3d |
|  | DPB | **Distrubution Panel Boards** |  |  |  |  |  |
|  | TE | **Telecom and Light Current Network** |  | 2026-11-29 | 2026-12-12 |  |  |
|  | PD | **Ducts Works** |  | 2026-12-03 | 2026-12-12 |  |  |
| CO-TE-DW-110 |  | Pipes Laying Works for Ducts of Telecom Network for Alignment-RD-03-1 | 4d | 2026-12-03 | 2026-12-07 | PRO-R25-TE-DL-100, ENG-SH-TE-A-110, ENG-MS-TE-A-110, ENG-MT-TE-A-100, PRO-TE-1DL-100, MS-CS-TE SS, MS-MM-130, MS-MM-140, CO-SD-MH-220, CO-SD-ML-130, CO-PW-ML-130, CO-PW-VC-220, CO-PW-FH-160, CON-LV-ML-120, CON-LV-HC-120, CO-EW-200, CO-SL-LP-570, CO-SL-CL-420, PRO-R25-SD-DL-110, PRO-R25-SD-DL-130, PRO-SD-1DL-130, PRO-SD-1DL-120, ENG-MT-SD-CB-A-110, ENG-SH-SD-CB-A-110, ENG-MS-SD-CB-A-110, MS-CS-SD SS, PRO-SW-1DL-110, PRO-R25-SW-DL-110, ENG-MT-SW-ML-A-100, ENG-SH-SW-ML-A-110, MS-CS-SW SS, ENG-MS-SW-ML-A-110, PRO-SW-1DL-100, PRO-R25-SW-DL-100, ENG-MT-SW-ML-A-110, ENG-MT-IR-ML-A-110, PRO-IR-1DL-110, PRO-R25-IR-DL-110, PRO-IR-1DL-100, CO-PW-ML-110, PRO-R25-IR-DL-100, ENG-SH-IR-ML-A-110, ENG-MS-IR-ML-A-110, ENG-MT-IR-ML-A-100, CO-PW-ML-100, MS-CS-IR SS, PRO-R25-SL-DL-160, ENG-MT-SL-DB-A-100, MS-CS-SL SS | 3d |
| CO-TE-DW-130 |  | Trench Backfilling and Compaction Works for Ducts of Telecom Network for Alignment-RD-03-1 | 4d | 2026-12-08 | 2026-12-12 | CO-TE-MH-160 FF, CO-TE-DW-110 | 3d |
|  | MH | **Manholes Works** |  | 2026-11-29 | 2026-12-05 |  |  |
| CO-TE-MH-140 |  | Excavation Works for Manholes of Telecom Network for Alignment-RD-03-1 | 2d | 2026-11-29 | 2026-11-30 | ENG-SH-TE-A-110, ENG-MS-TE-A-110, ENG-MT-TE-A-110, PRO-TE-1DL-110, MS-CS-TE SS, MS-MM-130, MS-MM-140, ENG-MT-TE-A-100, PRO-TE-1DL-100, CO-SD-MH-220, CO-SD-ML-130, CO-PW-ML-130, CO-PW-VC-220, CO-PW-FH-160, CON-LV-ML-120, CON-LV-HC-120, CO-EW-200, CO-SL-LP-570, PRO-R25-SD-DL-110, PRO-R25-SD-DL-130, PRO-SD-1DL-130, PRO-SD-1DL-120, ENG-MT-SD-CB-A-110, ENG-SH-SD-CB-A-110, ENG-MS-SD-CB-A-110, MS-CS-SD SS, PRO-SW-1DL-110, PRO-R25-SW-DL-110, ENG-MT-SW-ML-A-100, ENG-SH-SW-ML-A-110, MS-CS-SW SS, ENG-MS-SW-ML-A-110, PRO-SW-1DL-100, PRO-R25-SW-DL-100, ENG-MT-SW-ML-A-110, ENG-MT-IR-ML-A-110, PRO-IR-1DL-110, PRO-R25-IR-DL-110, PRO-IR-1DL-100, CO-PW-ML-110, PRO-R25-IR-DL-100, ENG-SH-IR-ML-A-110, ENG-MS-IR-ML-A-110, ENG-MT-IR-ML-A-100, CO-PW-ML-100, MS-CS-IR SS, PRO-R25-SL-DL-160, ENG-MT-SL-DB-A-100, MS-CS-SL SS, MS-CS-TE FF | 9d |
| CO-TE-MH-150 |  | Installation Works for Manholes of Telecom Network for Alignment-RD-03-1 | 2d | 2026-12-01 | 2026-12-02 | CO-TE-MH-140, PRO-R25-TE-DL-110 | 9d |
| CO-TE-MH-160 |  | Backfilling Works for Manholes of Telecom Network for Alignment-RD-03-1 | 2d | 2026-12-03 | 2026-12-05 | CO-TE-MH-150 | 9d |
|  | DD | **CCTV, Telephone, MSN, ACs System Works** |  | 2026-12-06 | 2026-12-09 |  |  |
| CO-TE-CTV-110 |  | Installation of CCTV, Telephone, ACS and MSN Systems Cables for Alignment-RD-03-1 | 4d | 2026-12-06 | 2026-12-09 | PRO-R25-CTV-DL-100, CO-TE-MH-160, ENG-SH-MSN-A-120, ENG-SH-CTV-A-110, ENG-MS-CTV-A-110, ENG-MT-CTV-A-100, PRO-CTV-1DL-100, MS-CS-TE SS, MS-MM-130, MS-MM-140 | 30d |
|  | RD | **Road Works** |  | 2026-12-13 | 2027-01-06 |  |  |
|  | RD | **Pre-Bituminous Construction** |  | 2026-12-13 | 2026-12-28 |  |  |
| CO-RD-PB-140 |  | Subgrade Layer for Road Works for Alignment-RD-03-1 | 7d | 2026-12-13 | 2026-12-20 | CO-EW-200, CO-SD-ML-130, CO-SD-MH-220, CO-PW-ML-130, CO-PW-VC-220, CO-TSE-ML-180, ENG-MS-RD-A-20, ENG-MS-RD-A-30, ENG-MS-RD-A-40, PRO-R25-RD-DL-100, CON-LV-HC-120, CON-LV-ML-120, ENG-MS-RD-A-10, ENG-SH-RD-A-100, ENG-SH-RD-A-110, MS-CS-RD SS, PRO-RD-1DL-100, MS-MM-130, MS-MM-140, CO-TE-DW-130, CO-PW-FH-160, CO-TE-MH-160, CON-LV-DP-120, CO-SL-CL-420, CO-SL-LP-570, PRO-R25-SD-DL-110, PRO-R25-SD-DL-130, PRO-SD-1DL-130, PRO-SD-1DL-120, ENG-MT-SD-CB-A-110, ENG-SH-SD-CB-A-110, ENG-MS-SD-CB-A-110, MS-CS-SD SS, PRO-SW-1DL-110, PRO-R25-SW-DL-110, ENG-MT-SW-ML-A-100, ENG-SH-SW-ML-A-110, MS-CS-SW SS, ENG-MS-SW-ML-A-110, PRO-SW-1DL-100, PRO-R25-SW-DL-100, ENG-MT-SW-ML-A-110, ENG-MT-IR-ML-A-110, PRO-IR-1DL-110, PRO-R25-IR-DL-110, PRO-IR-1DL-100, CO-PW-ML-110, PRO-R25-IR-DL-100, ENG-SH-IR-ML-A-110, ENG-MS-IR-ML-A-110, ENG-MT-IR-ML-A-100, CO-PW-ML-100, MS-CS-IR SS | 3d |
| CO-RD-PB-150 |  | Aggregate Base Course Layer for Road Works for Alignment-RD-03-1 | 7d | 2026-12-21 | 2026-12-28 | CO-RD-PB-140, PRO-R25-RD-DL-110, PRO-RD-1DL-110, CON-LV-ES-100 | 29d |
|  | 1 | **Bituminous Construction** |  | 2026-12-21 | 2026-12-28 |  |  |
| CO-RD-B-160 |  | Bituminous Base Courses Layers for Road Works for Alignment-RD-03-1 | 2d | 2026-12-21 | 2026-12-22 | PRO-R25-RD-DL-170, PRO-RD-1DL-130, PRO-R25-RD-DL-160, PRO-R25-RD-DL-160 FF, CO-RD-PB-150 SS, PRO-RD-1DL-120, PRO-RD-1DL-120 FF | 29d |
| CON-RD-MR-150 |  | Preparation of Asphaltic Wearing Course Layer for Roads Network for Alignment-RD-03-1 | 2d | 2026-12-27 | 2026-12-28 | PRO-RD-DL-200, PRO-RD-1DL-180, PRO-RD-1DL-190, PRO-RD-1DL-190 FF, PRO-RD-DL-210, PRO-RD-DL-210 FF, CO-RD-B-160 SS, CO-RD-B-160, CO-RD-B-160 FF, CO-PW-TF-100, CO-PW-TF-100 FF, CO-PW-TF-110, CO-PW-TF-110 FF, CO-PW-TF-120, CO-PW-TF-120 FF, CO-TE-CTV-TF-140, CO-TE-CTV-TF-140 FF, CO-TE-CTV-TF-330 SS, CO-TE-CTV-TF-330, CO-SD-MH-220, CO-SD-MH-220 FF, PRO-SD-1DL-140, PRO-SD-1DL-140 FF, PRO-R25-SD-DL-140, PRO-R25-SD-DL-140 FF, CO-SD-MH-260, CO-SD-MH-260 FF, PRO-R25-RD-DL-170, PRO-R25-RD-DL-170 FF, PRO-RD-1DL-130, PRO-RD-1DL-130 FF, PRO-R25-RD-DL-100, PRO-R25-RD-DL-100 FF, PRO-RD-1DL-100, PRO-RD-1DL-100 FF, MS-MM-140, MS-MM-140 FF, MS-MM-130, MS-MM-130 FF, MS-CS-RD SS, ENG-SH-RD-A-100, ENG-SH-RD-A-100 FF, ENG-SH-RD-A-110, ENG-SH-RD-A-110 FF, ENG-MS-RD-A-30, ENG-MS-RD-A-30 FF, ENG-MS-RD-A-20, ENG-MS-RD-A-20 FF, ENG-MS-RD-A-10, ENG-MS-RD-A-10 FF, ENG-MS-RD-A-40, ENG-MS-RD-A-40 FF, CO-TE-MH-190, CO-TE-MH-190 FF, CO-TE-DW-160, CO-TE-DW-160 FF, CO-SL-CL-300, CO-SL-CL-300 FF, CO-SL-LP-380, CO-SL-LP-380 FF, CON-LV-HC-150, CON-LV-HC-150 FF, CON-LV-ML-150, CON-LV-ML-150 FF, CO-MV-ML-300, CO-MV-ML-300 FF, CO-IR-ML-180, CO-IR-ML-180 FF, CO-PW-FH-190, CO-PW-FH-190 FF, CO-PW-VC-250, CO-PW-VC-250 FF, CO-PW-ML-160, CO-PW-ML-160 FF, CO-TSE-ML-230, CO-TSE-ML-230 FF, CO-SW-ML-160, CO-SW-ML-160 FF, CO-SW-MH-250, CO-SW-MH-250 FF, CO-SD-CB-200, CO-SD-CB-200 FF, CO-SD-ML-160, CO-SD-ML-160 FF, CO-EW-210_R, CO-EW-210_R FF, CO-SL-LP-520, CO-SL-LP-520 FF, CO-SD-ML-130, CO-SD-ML-130 FF, PRO-R25-SD-DL-110, PRO-R25-SD-DL-110 FF, PRO-R25-SD-DL-130, PRO-R25-SD-DL-130 FF, PRO-SD-1DL-130, PRO-SD-1DL-130 FF, PRO-SD-1DL-120, PRO-SD-1DL-120 FF, ENG-MT-SD-CB-A-110, ENG-MT-SD-CB-A-110 FF, ENG-SH-SD-CB-A-110, ENG-SH-SD-CB-A-110 FF, ENG-MS-SD-CB-A-110, ENG-MS-SD-CB-A-110 FF, MS-CS-SD SS, PRO-SW-1DL-110, PRO-SW-1DL-110 FF, PRO-R25-SW-DL-110, PRO-R25-SW-DL-110 FF, ENG-MT-SW-ML-A-100, ENG-MT-SW-ML-A-100 FF, ENG-SH-SW-ML-A-110, ENG-SH-SW-ML-A-110 FF, MS-CS-SW SS, CO-EW-200, CO-EW-200 FF, ENG-MS-SW-ML-A-110, ENG-MS-SW-ML-A-110 FF, PRO-SW-1DL-100, PRO-SW-1DL-100 FF, PRO-R25-SW-DL-100, PRO-R25-SW-DL-100 FF, ENG-MT-SW-ML-A-110, ENG-MT-SW-ML-A-110 FF, ENG-MT-IR-ML-A-110, ENG-MT-IR-ML-A-110 FF, PRO-IR-1DL-110, PRO-IR-1DL-110 FF, PRO-R25-IR-DL-110, PRO-R25-IR-DL-110 FF, PRO-IR-1DL-100, PRO-IR-1DL-100 FF, CO-PW-ML-110, CO-PW-ML-110 FF, PRO-R25-IR-DL-100, PRO-R25-IR-DL-100 FF, ENG-SH-IR-ML-A-110, ENG-SH-IR-ML-A-110 FF, ENG-MS-IR-ML-A-110, ENG-MS-IR-ML-A-110 FF, ENG-MT-IR-ML-A-100, ENG-MT-IR-ML-A-100 FF, CO-PW-ML-100, CO-PW-ML-100 FF, MS-CS-IR SS | 29d |
|  | LS | **Pavement Works** |  | 2026-12-23 | 2027-01-06 |  |  |
| CO-RD-PV-160 |  | Fixing of Curbstone for Sidewalks Pavement for Alignment-RD-03-1 | 5d | 2026-12-23 | 2026-12-28 | ENG-MS-HS-A-10, PRO-R25-RD-DL-130, PRO-RD-1DL-150, CO-RD-B-160 | 29d |
| CO-RD-PV-170 |  | Fixing of Interlock Tiles for Sidewalks Pavement for Alignment-RD-03-1 | 8d | 2026-12-29 | 2027-01-06 | CO-RD-PV-160, ENG-MS-HS-A-10, PRO-R25-RD-DL-120, PRO-RD-1DL-140 | 29d |
|  | TS | **Traffic Signs Boards and Roads Marking** |  | 2026-12-29 | 2027-01-02 |  |  |
| CO-RD-F-RM-180 |  | Application of Road Marking Works For Road Works for Alignment-RD-03-1 | 2d | 2026-12-29 | 2026-12-30 | CO-RD-PV-170 SS, ENG-MS-MRK-A-10, PRO-R25-RD-DL-150, ENG-SH-MRK-A-110, PRO-RD-1DL-170, CO-RD-PV-160, CON-RD-MR-150 | 29d |
| CO-RD-F-TS-120 |  | Installation Works of Traffic Signs Boards For Road Works for Alignment-RD-03-1 | 2d | 2026-12-31 | 2027-01-02 | CO-RD-F-RM-180, ENG-MS-TSB-A-10, PRO-R25-RD-DL-140, ENG-SH-TSB-A-100, PRO-RD-1DL-160 | 29d |
|  | 3 | **Finishes for Infrastructure Networks** |  | 2026-12-07 | 2027-01-10 |  |  |
|  | 11 | **Storm Drainage Network** |  | 2026-12-26 | 2026-12-31 |  |  |
|  | TF | **Testing and Finishes** |  | 2026-12-26 | 2026-12-31 |  |  |
| CO-SD-ML-TF-100 |  | Testing Work for Pipes of Storm Drainage Network for Alignment-RD-03-1 | 3d | 2026-12-26 | 2026-12-28 | CO-SD-ML-130, CO-SD-PO-110-P1, CO-SD-PO-110-P2 SS, CO-SD-MH-220, PRO-SD-1DL-140, PRO-R25-SD-DL-140, CO-SD-MH-260, PRO-R25-RD-DL-170, PRO-RD-1DL-130, PRO-R25-RD-DL-100, PRO-RD-1DL-100, MS-MM-140, MS-MM-130, MS-CS-RD SS, ENG-SH-RD-A-100, ENG-SH-RD-A-110, ENG-MS-RD-A-30, ENG-MS-RD-A-20, ENG-MS-RD-A-10, ENG-MS-RD-A-40, CO-TE-MH-190, CO-TE-DW-160, CO-SL-CL-300, CO-SL-LP-380, CON-LV-HC-150, CON-LV-ML-150, CO-MV-ML-300, CO-IR-ML-180, CO-PW-FH-190, CO-PW-VC-250, CO-PW-ML-160, CO-TSE-ML-230, CO-SW-ML-160, CO-SW-MH-250, CO-SD-CB-200, CO-SD-ML-160, CO-EW-210_R, CO-SL-LP-520 | 13d |

| ID | WBS | Task | Duration | Start | Finish | Predecessors | Total float |
| --- | --- | --- | --- | --- | --- | --- | --- |
| CO-SD-MH-TF-210 |  | Testing Works for Manholes of Storm Drainage Network for Alignment-RD-03-1 | 3d | 2026-12-29 | 2026-12-31 | CO-SD-MH-220, CO-SD-ML-TF-100, PRO-SD-1DL-140, PRO-R25-SD-DL-140, CO-SD-MH-260, PRO-R25-RD-DL-170, PRO-RD-1DL-130, PRO-R25-RD-DL-100, PRO-RD-1DL-100, MS-MM-140, MS-MM-130, MS-CS-RD SS, ENG-SH-RD-A-100, ENG-SH-RD-A-110, ENG-MS-RD-A-30, ENG-MS-RD-A-20, ENG-MS-RD-A-10, ENG-MS-RD-A-40, CO-TE-MH-190, CO-TE-DW-160, CO-SL-CL-300, CO-SL-LP-380, CON-LV-HC-150, CON-LV-ML-150, CO-MV-ML-300, CO-IR-ML-180, CO-PW-FH-190, CO-PW-VC-250, CO-PW-ML-160, CO-TSE-ML-230, CO-SW-ML-160, CO-SW-MH-250, CO-SD-CB-200, CO-SD-ML-160, CO-EW-210_R, CO-SL-LP-520 | 29d |
|  | 10 | **Sewage Network** |  |  |  |  |  |
|  | TF | **Testing and Finishes** |  |  |  |  |  |
|  | 9 | **Potable Water Network** |  | 2026-12-22 | 2026-12-26 |  |  |
|  | TF | **Testing and Finishes** |  | 2026-12-22 | 2026-12-26 |  |  |
| CO-PW-TF-100 |  | Final Finishes works and Covers for Valves and Valve Chambers for Alignment-RD-03-1 | 4d | 2026-12-22 | 2026-12-26 | CO-PW-VC-220, ENG-MT-PW-TF-A-100, PRO-PW-1DL-130, PRO-R25-PW-DL-130, CO-PW-TF-120 SS | 15d |
| CO-PW-TF-110 |  | Testing of Potable Water Network for Alignment-RD-03-1 | 2d | 2026-12-22 | 2026-12-23 | CO-PW-ML-130, CO-PW-TF-100 SS | 29d |
| CO-PW-TF-120 |  | Fire Hydrant Finishies (S.Box + Safety + Marker Post ) of Potable Water Network for Alignment-RD-03-1 | 3d | 2026-12-22 | 2026-12-24 | CO-PW-FH-160, ENG-MT-PW-TF-A-100, PRO-SW-1DL-110, PRO-R25-SW-DL-110, ENG-MT-SW-ML-A-100, ENG-SH-SW-ML-A-110, MS-CS-SW SS, CO-EW-200, MS-MM-130, MS-MM-140, ENG-MS-SW-ML-A-110, CO-SD-MH-220, CO-SD-ML-130, PRO-R25-SD-DL-110, PRO-R25-SD-DL-130, PRO-SD-1DL-130, PRO-SD-1DL-120, ENG-MT-SD-CB-A-110, ENG-SH-SD-CB-A-110, ENG-MS-SD-CB-A-110, MS-CS-SD SS, PRO-SW-1DL-100, PRO-R25-SW-DL-100, ENG-MT-SW-ML-A-110, PRO-SD-1DL-140, PRO-R25-SD-DL-140, CO-SD-MH-260, PRO-R25-RD-DL-170, PRO-RD-1DL-130, PRO-R25-RD-DL-100, PRO-RD-1DL-100, MS-CS-RD SS, ENG-SH-RD-A-100, ENG-SH-RD-A-110, ENG-MS-RD-A-30, ENG-MS-RD-A-20, ENG-MS-RD-A-10, ENG-MS-RD-A-40, CO-TE-MH-190 SS, CO-TE-DW-160 SS, CO-SL-CL-300, CO-SL-LP-380, CON-LV-HC-150, CON-LV-ML-150, CO-MV-ML-300, CO-IR-ML-180, CO-PW-FH-190, CO-PW-VC-250, CO-PW-ML-160, CO-TSE-ML-230, CO-SW-ML-160, CO-SD-CB-200, CO-SD-ML-160, CO-EW-210_R, CO-SL-LP-520 | 14d |
|  | 13 | **Irrigation Network** |  |  |  |  |  |
|  | TF | **Testing and Finishes** |  |  |  |  |  |
|  | 1 | **Treated Sewage Effluent (Tse)** |  | 2027-01-10 | 2027-01-10 |  |  |
|  | TF | **Testing and Finishes** |  | 2027-01-10 | 2027-01-10 |  |  |
| CO-TSE-TF-170 |  | Final Testing (pressure tests) of Treated Sewage Effluent (Tse) for Alignment-RD-03-1 | 1d | 2027-01-10 | 2027-01-10 | CO-TSE-ML-180, CO-PW-TF-130, CO-TSE-TF-180 | 15d |
|  | 6 | **Low Voltage Network** |  | 2026-12-07 | 2026-12-10 |  |  |
|  | TT | **Termination and Testing Works** |  | 2026-12-07 | 2026-12-10 |  |  |
| CON-LV-TT-110 |  | Testing and Termination Works for Distribution Pillars Units of Low Voltage Network for Alignment-RD-03-1 | 2d | 2026-12-07 | 2026-12-08 | PRO-LV-TT-1DL-100, PRO-LV-TT-DL-100, CON-LV-DP-120 | 37d |
| CON-LV-TT-100 |  | Testing and Termination Works for Substation Low Voltage Panel Boards of Low Voltage Network for Alignment-RD-03-1 | 2d | 2026-12-09 | 2026-12-10 | CON-LV-TT-110, PRO-LV-TT-1DL-100, PRO-LV-TT-DL-100, CON-LV-HC-120, CON-LV-ML-120 | 47d |
|  | 1 | **Earthing System Works** |  | 2026-12-09 | 2026-12-10 |  |  |
| CON-LV-ES-100 |  | Earthing System Works for Distribution Pillars Units of Low Voltage Network for Alignment-RD-03-1 | 2d | 2026-12-09 | 2026-12-10 | CON-LV-TT-110, PRO-LV-DP-1DL-110, PRO-LV-DP-DL-120, CON-LV-DP-120 | 37d |
|  | 12 | **Street Lighting Network** |  | 2026-12-15 | 2027-01-03 |  |  |
|  | TR | **Termination and Testing Works** |  | 2026-12-15 | 2027-01-03 |  |  |
| CO-SL-LP-580 |  | Installation Works for Lighting Fixtures With Drop Wire of Street Lighting Network for Alignment-RD-03-1 | 6d | 2026-12-15 | 2026-12-21 | ENG-MT-SL-A-120, PRO-R25-SL-DL-140, CO-SL-LP-570, CO-SL-LP-530, PRO-R25-SL-DL-160, CO-SL-CL-420, ENG-MT-SL-DB-A-100, MS-CS-SL SS, MS-MM-130, MS-MM-140, CO-EW-200 | 24d |
| CO-SL-TF-570 |  | Testing Works for Lighting Poles of Street Lighting Network for Alignment-RD-03-1 | 6d | 2026-12-28 | 2027-01-03 | CO-SL-LP-580, CO-SL-ES-330, PRO-R25-SL-DL-130, CO-SL-TF-530, PRO-R25-SL-DL-160, CO-SL-LP-570, CO-SL-CL-420, ENG-MT-SL-DB-A-100, MS-CS-SL SS, MS-MM-130, MS-MM-140, CO-EW-200 | 27d |
|  | ES | **Earthing System Works** |  | 2026-12-22 | 2026-12-27 |  |  |
| CO-SL-ES-320 |  | Install Earthing System Works for Lighting Poles of Street Lighting Network for Alignment-RD-03-1 | 3d | 2026-12-22 | 2026-12-24 | CO-SL-LP-580, ENG-MT-SL-ES-A-100, PRO-R25-SL-DL-150 | 24d |
| CO-SL-ES-330 |  | Install Earthing System Works for Lighting Panel Boards of Street Lighting Network for Alignment-RD-03-1 | 2d | 2026-12-26 | 2026-12-27 | CO-SL-ES-320, PRO-R25-SL-DL-150 | 25d |
|  | 3 | **Telecom and Light Current Network** |  | 2026-12-10 | 2026-12-16 |  |  |
|  | 1 | **Testing and Finishes** |  | 2026-12-10 | 2026-12-16 |  |  |
| CO-TE-CTV-TF-140 |  | Testing and Interface modules with Telecom for Alignment-RD-03-1 | 6d | 2026-12-10 | 2026-12-16 | CO-TE-CTV-110 | 30d |
| CO-TE-CTV-TF-330 |  | Testing and Interface modules with CCTV, Telephone, MSN and Access Control for Alignment-RD-03-1 | 6d | 2026-12-10 | 2026-12-16 | CO-TE-CTV-TF-140 SS, CO-TE-CTV-110 | 30d |
|  | 2 | **Alignment-RD-03-2** |  | 2026-07-21 | 2027-02-06 |  |  |
|  | EW | **Earthworks** |  | 2026-07-21 | 2026-08-03 |  |  |
|  | EW | **Earthworks** |  | 2026-07-21 | 2026-08-03 |  |  |
| CO-EW-240 |  | Excavation and Backfilling Works Upto Design Level for Earthworks for Alignment-RD-03-2 | 12d | 2026-07-21 | 2026-08-03 | MS-CS-PS SS, MOB-30, MOB-20, MOB-80, MOB-40, MOB-50, MOB-60, MOB-10, MOB-70, PRE-CON-MDC-10, PRE-CON-MDC-20, PRE-CON-MDC-30, PRE-CON-MDC-40, PRE-CON-MDC-50, PRE-CON-MDC-60, PRE-CON-MDC-70, PRE-CON-MDC-80, MS-MM-100, MS-MM-130, MS-MM-140, MS-MM-150, CO-EW-210, CO-EW-210_R | 4d |
|  | SD | **Storm Drainage Network** |  | 2026-08-22 | 2026-10-15 |  |  |
|  | MH | **Manholes** |  | 2026-08-22 | 2026-10-03 |  |  |
| CO-SD-MH-350 |  | Trench Excavation and Bedding Works for Manholes of Storm Drainage Network for Alignment-RD-03-2 | 10d | 2026-08-22 | 2026-09-01 | ENG-MT-SD-ML-A-100, MS-CS-SD SS, CO-EW-240, ENG-MS-SD-ML-A-110, ENG-MT-SD-ML-A-110, ENG-SH-SD-ML-A-110, MS-MM-130, MS-MM-140, CO-SD-MH-230, CO-SD-ML-130 | 19d |
| CO-SD-MH-360 |  | Install RC Footing Works for Manholes of Storm Drainage Network for Alignment-RD-03-2 | 9d | 2026-09-02 | 2026-09-12 | CO-SD-MH-350, PRO-R25-SD-DL-100 FF, PRO-SD-1DL-100, CO-SD-MH-240 | 19d |
| CO-SD-MH-370 |  | Install RC Wall Rings & Slab Works for Manholes of Storm Drainage Network for Alignment-RD-03-2 | 10d | 2026-09-13 | 2026-09-24 | CO-SD-MH-360, PRO-SD-1DL-100, CO-SD-MH-250 | 19d |
| CO-SD-MH-380 |  | Backfilling Works for Manholes of Storm Drainage Network for Alignment-RD-03-2 | 7d | 2026-09-26 | 2026-10-03 | CO-SD-MH-370, CO-SD-MH-260 | 30d |
|  | ML | **Main Line Sections** |  | 2026-09-26 | 2026-10-15 |  |  |
| CO-SD-ML-230 |  | Trench Excavation and Bedding Works for Main Lines of Storm Drainage Network for Alignment-RD-03-2 | 7d | 2026-09-26 | 2026-10-03 | CO-EW-240, ENG-SH-SD-ML-A-110, ENG-MS-SD-ML-A-110, ENG-MT-SD-ML-A-110, MS-CS-SD SS, MS-MM-130, MS-MM-140, CO-SD-MH-370, CO-SD-MH-350 SS, CO-SD-MH-350 FF, CO-SD-ML-140 | 19d |
| CO-SD-ML-240 |  | Pipes Laying Works for Main Lines of Storm Drainage Network for Alignment-RD-03-2 | 5d | 2026-10-04 | 2026-10-08 | CO-SD-ML-230, PRO-R25-SD-DL-120 FF, PRO-SD-1DL-110, CO-SD-MH-370, CO-SD-ML-150 SS | 19d |
| CO-SD-ML-250 |  | Trench Backfilling and Compaction Works for Main Lines of Storm Drainage Network for Alignment-RD-03-2 | 6d | 2026-10-10 | 2026-10-15 | CO-SD-ML-240, CO-SD-ML-160 SS, CO-SD-MH-380 FF | 19d |
|  | CB | **Catch Basin Sections** |  |  |  |  |  |
|  | SW | **Sewage Network** |  |  |  |  |  |
|  | 1 | **Manholes** |  |  |  |  |  |
|  | ML | **Main Line Sections** |  |  |  |  |  |
|  | IR | **Irrigation Network** |  |  |  |  |  |
|  | ML | **Main Line Pipes** |  |  |  |  |  |
|  | MV | **Medium Voltage Network** |  | 2026-11-04 | 2026-11-22 |  |  |
|  | CW | **Cabling Works** |  | 2026-11-04 | 2026-11-22 |  |  |
| CO-MV-ML-370 |  | Trench Excavation and Bedding Works for Medium Voltage Network for Alignment-RD-03-2 | 5d | 2026-11-04 | 2026-11-09 | ENG-SH-MV-A-110, ENG-MS-MV-A-110, MS-CS-MV SS, CO-SD-ML-250, CO-SD-MH-380, CO-EW-240, MS-MM-130, MS-MM-140, CO-MV-ML-280, CO-SD-CB-200, PRO-R25-SD-DL-110, PRO-R25-SD-DL-130, PRO-SD-1DL-130, PRO-SD-1DL-120, CO-SD-CB-190, ENG-MT-SD-CB-A-110, ENG-SH-SD-CB-A-110, ENG-MS-SD-CB-A-110, MS-CS-SD SS, CO-SD-CB-180, CO-SW-MH-250, CO-SW-MH-240, CO-SW-MH-230, PRO-SW-1DL-110, PRO-R25-SW-DL-110, CO-SW-MH-220, ENG-MT-SW-ML-A-100, ENG-SH-SW-ML-A-110, MS-CS-SW SS, ENG-MS-SW-ML-A-110, CO-SW-MH-210, CO-SW-ML-160, PRO-SW-1DL-100, PRO-R25-SW-DL-100, CO-SW-ML-150, ENG-MT-SW-ML-A-110, CO-SW-ML-140 | 3d |
| CO-MV-ML-380 |  | Duct Laying Works for Medium Voltage Network for Alignment-RD-03-2 | 5d | 2026-11-11 | 2026-11-16 | CO-MV-ML-370, PRO-MV-DL-100, PRO-MV-1DL-100, CO-MV-ML-290 | 6d |
| CO-MV-ML-390 |  | Trench Backfilling and Compaction Works for Medium Voltage Network for Alignment-RD-03-2 | 4d | 2026-11-18 | 2026-11-22 | CO-MV-ML-380, CO-MV-ML-300 | 5d |
|  | LV | **Low Voltage Network** |  | 2026-11-25 | 2026-12-29 |  |  |
|  | MLVC | **Main Low Voltage Cables Works ( Cable 300 MM )** |  | 2026-11-25 | 2026-12-19 |  |  |
| CON-LV-ML-220 |  | Trench Excavation and Bedding Works for Main Cable of Low Voltage Network for Alignment-RD-03-2 | 6d | 2026-11-25 | 2026-12-01 | ENG-SH-LV-A-120, ENG-MS-MV-A-120, MS-CS-LV SS, CO-MV-ML-390, CO-EW-240, MS-MM-130, MS-MM-140, CON-LV-ML-130, CO-SD-CB-200, PRO-R25-SD-DL-110, PRO-R25-SD-DL-130, PRO-SD-1DL-130, PRO-SD-1DL-120, CO-SD-CB-190, ENG-MT-SD-CB-A-110, ENG-SH-SD-CB-A-110, ENG-MS-SD-CB-A-110, MS-CS-SD SS, CO-SD-ML-250, CO-SD-CB-180, CO-SW-ML-160, CO-SW-MH-250, CO-SW-MH-240, CO-SW-MH-230, PRO-SW-1DL-110, PRO-R25-SW-DL-110, CO-SW-MH-220, ENG-MT-SW-ML-A-100, ENG-SH-SW-ML-A-110, MS-CS-SW SS, ENG-MS-SW-ML-A-110, CO-SD-MH-380, CO-SW-MH-210, PRO-SW-1DL-100, PRO-R25-SW-DL-100, CO-SW-ML-150, ENG-MT-SW-ML-A-110, CO-SW-ML-140 | 3d |
| CON-LV-ML-230 |  | Cable Laying Works for Main Cable of Low Voltage Network for Alignment-RD-03-2 | 9d | 2026-12-02 | 2026-12-12 | CON-LV-ML-220, PRO-LV-ML-1DL-100, PRO-LV-ML-DL-100, CON-LV-ML-140 | 3d |
| CON-LV-ML-240 |  | Trench Backfilling and Compaction Works for Main Cable of Low Voltage Network for Alignment-RD-03-2 | 6d | 2026-12-13 | 2026-12-19 | CON-LV-ML-230, CON-LV-ML-150 | 6d |
|  | SLVC | **Service Low Voltage Cables Works ( Cable 70 MM )** |  | 2026-12-02 | 2026-12-29 |  |  |
| CON-LV-HC-220 |  | Trench Excavation and Bedding Works for Service Cable of Low Voltage Network for Alignment-RD-03-2 | 5d | 2026-12-02 | 2026-12-07 | CON-LV-ML-220, ENG-MS-MV-A-120, MS-CS-LV SS, CO-EW-240, ENG-SH-LV-A-120, MS-MM-130, MS-MM-140, CO-SD-ML-250, CO-SD-MH-380, CON-LV-HC-130, CO-SD-CB-200, PRO-R25-SD-DL-110, PRO-R25-SD-DL-130, PRO-SD-1DL-130, PRO-SD-1DL-120, CO-SD-CB-190, ENG-MT-SD-CB-A-110, ENG-SH-SD-CB-A-110, ENG-MS-SD-CB-A-110, MS-CS-SD SS, CO-SD-CB-180, CO-SW-MH-250, CO-SW-MH-240, CO-SW-MH-230, PRO-SW-1DL-110, PRO-R25-SW-DL-110, CO-SW-MH-220, ENG-MT-SW-ML-A-100, ENG-SH-SW-ML-A-110, MS-CS-SW SS, ENG-MS-SW-ML-A-110, CO-SW-MH-210, CO-SW-ML-160, PRO-SW-1DL-100, PRO-R25-SW-DL-100, CO-SW-ML-150, ENG-MT-SW-ML-A-110, CO-SW-ML-140 | 7d |
| CON-LV-HC-230 |  | Cable Laying Works for Service Cable of Low Voltage Network for Alignment-RD-03-2 | 9d | 2026-12-13 | 2026-12-22 | CON-LV-HC-220, CON-LV-ML-230, PRO-LV-HC-1DL-100, PRO-LV-HC-DL-100, CON-LV-HC-140 | 3d |
| CON-LV-HC-240 |  | Trench Backfilling and Compaction Works for Service Cable of Low Voltage Network for Alignment-RD-03-2 | 6d | 2026-12-23 | 2026-12-29 | CON-LV-HC-230, CON-LV-ML-240, CON-LV-HC-150 | 3d |
|  | DP | **Distribution Pillars Works** |  | 2026-12-03 | 2026-12-15 |  |  |
| CON-LV-DP-220 |  | Foundation Excavation Works for Distribution Pillars of Low Voltage Network for Alignment-RD-03-2 | 7d | 2026-12-03 | 2026-12-10 | CON-LV-ML-220, ENG-MS-MV-A-120, MS-CS-LV SS, CO-EW-240, MS-MM-130, MS-MM-140, CON-LV-DP-130 | 15d |
| CON-LV-DP-230 |  | Pouring Plain Concrete For Distribution Pillar Units of Low Voltage Network for Alignment-RD-03-2 | 2d | 2026-12-12 | 2026-12-13 | CON-LV-DP-220, CON-LV-DP-130 | 15d |
| CON-LV-DP-240 |  | Installation Works for Distribution Pillar Units of Low Voltage Network for Alignment-RD-03-2 | 2d | 2026-12-14 | 2026-12-15 | CON-LV-DP-230, PRO-LV-DP-1DL-100, PRO-LV-DP-DL-100, CON-LV-DP-130 | 15d |
|  | SL | **Street Lighting Network** |  | 2026-11-10 | 2026-12-03 |  |  |
|  | LP | **Lighting Poles Works** |  | 2026-11-10 | 2026-11-28 |  |  |

| ID | WBS | Task | Duration | Start | Finish | Predecessors | Total float |
| --- | --- | --- | --- | --- | --- | --- | --- |
| CO-SL-LP-500 |  | Installation Works for Lighting Poles Foundation of Street Lighting Network for Alignment-RD-03-2 | 5d | 2026-11-10 | 2026-11-15 | PRO-R25-SL-DL-110, ENG-SH-SL-A-110, ENG-MS-SL-A-110, ENG-MT-SL-A-100, MS-CS-SL SS, MS-MM-130, MS-MM-140, CO-EW-240, CO-MV-ML-370 | 14d |
| CO-SL-LP-510 |  | Installation Works for Lighting Poles of Street Lighting Network for Alignment-RD-03-2 | 5d | 2026-11-16 | 2026-11-21 | CO-SL-LP-500, ENG-MT-SL-A-110, PRO-R25-SL-DL-120 | 14d |
| CO-SL-LP-520 |  | Backfilling Works for Lighting Poles of Street Lighting Network for Alignment-RD-03-2 | 6d | 2026-11-22 | 2026-11-28 | CO-SL-LP-510 | 18d |
|  | CW | **Cabling Works** |  | 2026-11-23 | 2026-12-03 |  |  |
| CO-SL-CL-380 |  | Cable Laying Works for Street Lighting Network for Alignment-RD-03-2 | 5d | 2026-11-23 | 2026-11-28 | PRO-R25-SL-DL-100, ENG-SH-SL-A-110, ENG-MS-SL-A-110, ENG-MT-SL-ML-A-100, PRO-SL-1DL-100, MS-CS-SL SS, MS-MM-130, MS-MM-140, CO-SL-LP-510, CO-PW-ML-160, CO-PW-FH-190, CO-EW-240, CO-MV-ML-390, CO-SD-ML-250, CO-SD-MH-380, CO-SD-CB-200, PRO-R25-SD-DL-110, PRO-R25-SD-DL-130, PRO-SD-1DL-130, PRO-SD-1DL-120, CO-SD-CB-190, ENG-MT-SD-CB-A-110, ENG-SH-SD-CB-A-110, ENG-MS-SD-CB-A-110, MS-CS-SD SS, CO-SD-CB-180, CO-SW-MH-250, CO-SW-MH-240, CO-SW-MH-230, PRO-SW-1DL-110, PRO-R25-SW-DL-110, CO-SW-MH-220, ENG-MT-SW-ML-A-100, ENG-SH-SW-ML-A-110, MS-CS-SW SS, ENG-MS-SW-ML-A-110, CO-SW-MH-210, CO-SW-ML-160, PRO-SW-1DL-100, PRO-R25-SW-DL-100, CO-SW-ML-150, ENG-MT-SW-ML-A-110, CO-SW-ML-140, CO-IR-ML-180, CO-IR-ML-190, ENG-MT-IR-ML-A-110, PRO-IR-1DL-110, PRO-R25-IR-DL-110, CO-IR-ML-170, PRO-IR-1DL-100, PRO-R25-IR-DL-100, CO-IR-ML-160, ENG-SH-IR-ML-A-110, ENG-MS-IR-ML-A-110, ENG-MT-IR-ML-A-100, MS-CS-IR SS, CO-IR-ML-150 | 13d |
| CO-SL-CL-390 |  | Trench Backfilling and Compaction Works for Street Lighting Network for Alignment-RD-03-2 | 5d | 2026-11-29 | 2026-12-03 | CO-SL-CL-380, CO-SL-LP-520 FF | 13d |
|  | DPB | **Distrubution Panel Boards** |  |  |  |  |  |
|  | TE | **Telecom and Light Current Network** |  | 2026-12-30 | 2027-01-02 |  |  |
|  | PD | **Ducts Works** |  |  |  |  |  |
|  | MH | **Manholes Works** |  |  |  |  |  |
|  | DD | **CCTV, Telephone, MSN, ACs System Works** |  | 2026-12-30 | 2027-01-02 |  |  |
| CO-TE-CTV-240 |  | Installation of CCTV, Telephone, ACS and MSN Systems Cables for Alignment-RD-03-2 | 3d | 2026-12-30 | 2027-01-02 | PRO-R25-CTV-DL-100, CO-TE-CTV-150, ENG-SH-MSN-A-120, ENG-SH-CTV-A-110, ENG-MS-CTV-A-110, ENG-MT-CTV-A-100, PRO-CTV-1DL-100, MS-CS-TE SS, MS-MM-130, MS-MM-140, CO-TE-MH-190, PRO-R25-TE-DL-110, CO-TE-MH-180, ENG-SH-TE-A-110, ENG-MS-TE-A-110, ENG-MT-TE-A-110, PRO-TE-1DL-110, CO-TE-MH-170, ENG-MT-TE-A-100, PRO-TE-1DL-100, CO-SD-MH-380, CO-SD-ML-250, CO-MV-ML-390, CON-LV-ML-240, CON-LV-HC-240, CO-EW-240, CON-LV-DP-240, CO-SL-LP-520, CO-SL-CL-390, CO-SD-MH-260, CO-SD-ML-160, CO-SD-CB-200, CO-SW-MH-250, CO-SW-ML-160, CO-PW-ML-160, CO-PW-VC-250, CO-PW-FH-190, CO-IR-ML-180, CO-MV-ML-300, CON-LV-ML-150, CON-LV-HC-150, CO-SL-LP-380, CO-SL-CL-300, CO-EW-210_R, PRO-LV-DP-1DL-100, PRO-LV-DP-DL-100, CON-LV-DP-130, PRO-R25-SL-DL-160 SS, ENG-MT-SL-DB-A-100, MS-CS-SL SS, PRO-R25-SD-DL-110, PRO-R25-SD-DL-130, PRO-SD-1DL-130, PRO-SD-1DL-120, CO-SD-CB-190, ENG-MT-SD-CB-A-110, ENG-SH-SD-CB-A-110, ENG-MS-SD-CB-A-110, MS-CS-SD SS, CO-SD-CB-180, CO-SW-MH-240, CO-SW-MH-230, PRO-SW-1DL-110, PRO-R25-SW-DL-110, CO-SW-MH-220, ENG-MT-SW-ML-A-100, ENG-SH-SW-ML-A-110, MS-CS-SW SS, ENG-MS-SW-ML-A-110, CO-SW-MH-210, PRO-SW-1DL-100, PRO-R25-SW-DL-100, CO-SW-ML-150, ENG-MT-SW-ML-A-110, CO-SW-ML-140, CO-IR-ML-190, ENG-MT-IR-ML-A-110, PRO-IR-1DL-110, PRO-R25-IR-DL-110, CO-IR-ML-170, PRO-IR-1DL-100, PRO-R25-IR-DL-100, CO-IR-ML-160, ENG-SH-IR-ML-A-110, ENG-MS-IR-ML-A-110, ENG-MT-IR-ML-A-100, MS-CS-IR SS, CO-IR-ML-150, CO-SL-LP-370, PRO-R25-SL-DL-160 | 20d |
|  | RD | **Road Works** |  | 2026-12-30 | 2027-02-06 |  |  |
|  | RD | **Pre-Bituminous Construction** |  | 2026-12-30 | 2027-01-10 |  |  |
| CO-RD-PB-220 |  | Subgrade Layer for Road Works for Alignment-RD-03-2 | 5d | 2026-12-30 | 2027-01-04 | CO-EW-240, CO-SD-ML-250, CO-SD-MH-380, CO-MV-ML-390, ENG-MS-RD-A-20, ENG-MS-RD-A-30, ENG-MS-RD-A-40, PRO-R25-RD-DL-100, CON-LV-HC-240, CON-LV-ML-240, ENG-MS-RD-A-10, ENG-SH-RD-A-100, ENG-SH-RD-A-110, MS-CS-RD SS, PRO-RD-1DL-100, MS-MM-130, MS-MM-140, CON-LV-DP-240, CO-SL-CL-390, CO-SL-TF-530, CO-SD-CB-200, PRO-R25-SD-DL-110, PRO-R25-SD-DL-130, PRO-SD-1DL-130, PRO-SD-1DL-120, CO-SD-CB-190, ENG-MT-SD-CB-A-110, ENG-SH-SD-CB-A-110, ENG-MS-SD-CB-A-110, MS-CS-SD SS, CO-SD-CB-180, CO-SW-MH-250, CO-SW-MH-240, CO-SW-MH-230, PRO-SW-1DL-110, PRO-R25-SW-DL-110, CO-SW-MH-220, ENG-MT-SW-ML-A-100, ENG-SH-SW-ML-A-110, MS-CS-SW SS, ENG-MS-SW-ML-A-110, CO-SW-MH-210, CO-SW-ML-160, PRO-SW-1DL-100, PRO-R25-SW-DL-100, CO-SW-ML-150, ENG-MT-SW-ML-A-110, CO-SW-ML-140, CO-IR-ML-180, CO-IR-ML-190, ENG-MT-IR-ML-A-110, PRO-IR-1DL-110, PRO-R25-IR-DL-110, CO-IR-ML-170, PRO-IR-1DL-100, PRO-R25-IR-DL-100, CO-IR-ML-160, ENG-SH-IR-ML-A-110, ENG-MS-IR-ML-A-110, ENG-MT-IR-ML-A-100, MS-CS-IR SS, CO-IR-ML-150, CO-TE-DW-160, CO-TE-DW-150, PRO-R25-TE-DL-100, ENG-SH-TE-A-110, ENG-MS-TE-A-110, ENG-MT-TE-A-100, PRO-TE-1DL-100, MS-CS-TE SS, CO-SL-LP-520, CO-SD-MH-260, CO-SD-ML-160, CO-PW-ML-160, CO-PW-VC-250, CO-PW-FH-190, CO-MV-ML-300, CON-LV-ML-150, CON-LV-HC-150, CO-SL-LP-380, CO-SL-CL-300, CO-EW-210_R, PRO-LV-DP-1DL-100, PRO-LV-DP-DL-100, CON-LV-DP-130, PRO-R25-SL-DL-160 SS, ENG-MT-SL-DB-A-100, MS-CS-SL SS, CO-SL-LP-370, PRO-R25-SL-DL-160, CO-TE-MH-190, PRO-R25-TE-DL-110, CO-TE-MH-180, ENG-MT-TE-A-110, PRO-TE-1DL-110, CO-TE-MH-170 | 3d |
| CO-RD-PB-230 |  | Installation of Aggregate Base Course Layer and Interlock Works for Road Works for Alignment-RD-03-2 | 5d | 2027-01-05 | 2027-01-10 | CO-RD-PB-220, PRO-R25-RD-DL-110, PRO-RD-1DL-110 | 3d |
|  | 1 | **Bituminous Construction** |  | 2027-01-11 | 2027-01-27 |  |  |
| CO-RD-B-240 |  | Bituminous Base Courses Layers for Road Works for Alignment-RD-03-2 | 3d | 2027-01-11 | 2027-01-13 | PRO-R25-RD-DL-170, PRO-RD-1DL-130, PRO-R25-RD-DL-100, PRO-RD-1DL-100, MS-MM-140, MS-MM-130, MS-CS-RD SS, ENG-SH-RD-A-100, ENG-SH-RD-A-110, ENG-MS-RD-A-30, ENG-MS-RD-A-20, ENG-MS-RD-A-10, ENG-MS-RD-A-40, CO-TE-MH-190, CO-TE-DW-160, CO-SL-CL-300, CO-SL-LP-380, CON-LV-HC-150, CON-LV-ML-150, CO-MV-ML-300, CO-IR-ML-180, CO-PW-FH-190, CO-PW-VC-250, CO-PW-ML-160, CO-TSE-ML-230, CO-SW-ML-160, CO-SW-MH-250, CO-SD-CB-200, CO-SD-ML-160, CO-SD-MH-260, CO-EW-210_R, CO-SL-LP-520, PRO-R25-RD-DL-160, PRO-R25-RD-DL-160 FF, CO-RD-PB-230 SS, CO-RD-PB-230, CO-RD-PB-230 FF, PRO-RD-1DL-120, PRO-RD-1DL-120 FF, PRO-R25-RD-DL-100 FF, PRO-RD-1DL-100 FF, MS-MM-140 FF, MS-MM-130 FF, ENG-SH-RD-A-100 FF, ENG-SH-RD-A-110 FF, ENG-MS-RD-A-30 FF, ENG-MS-RD-A-20 FF, ENG-MS-RD-A-10 FF, ENG-MS-RD-A-40 FF, CO-TE-MH-190 FF, CO-TE-DW-160 FF, CO-SL-CL-300 FF, CO-SL-LP-380 FF, CON-LV-HC-150 FF, CON-LV-ML-150 FF, CO-MV-ML-300 FF, CO-IR-ML-180 FF, CO-PW-FH-190 FF, CO-PW-VC-250 FF, CO-PW-ML-160 FF, CO-TSE-ML-230 FF, CO-SW-ML-160 FF, CO-SW-MH-250 FF, CO-SD-CB-200 FF, CO-SD-ML-160 FF, CO-SD-MH-260 FF, CO-EW-210_R FF, CO-SL-LP-520 FF | 3d |
| CON-RD-MR-230 |  | Preparation of Asphaltic Wearing Course Layer for Roads Network for Alignment-RD-03-2 | 3d | 2027-01-25 | 2027-01-27 | PRO-RD-DL-200, PRO-RD-1DL-180, PRO-RD-1DL-190, PRO-RD-1DL-190 FF, PRO-RD-DL-210, PRO-RD-DL-210 FF, CO-RD-B-240 SS, CO-RD-B-240, CO-RD-B-240 FF, CO-SD-CB-TF-260, CO-SD-CB-TF-260 FF, CO-SD-MH-TF-290, CO-SD-MH-TF-290 FF, CO-TE-CTV-TF-320, CO-TE-CTV-TF-320 FF, CO-SD-MH-380, CO-SD-MH-380 FF, PRO-SD-1DL-140, PRO-SD-1DL-140 FF, PRO-R25-SD-DL-140, PRO-R25-SD-DL-140 FF, CO-SD-MH-260, CO-SD-MH-260 FF, PRO-R25-RD-DL-170, PRO-R25-RD-DL-170 FF, PRO-RD-1DL-130, PRO-RD-1DL-130 FF, PRO-R25-RD-DL-100, PRO-R25-RD-DL-100 FF, PRO-RD-1DL-100, PRO-RD-1DL-100 FF, MS-MM-140, MS-MM-140 FF, MS-MM-130, MS-MM-130 FF, MS-CS-RD SS, ENG-SH-RD-A-100, ENG-SH-RD-A-100 FF, ENG-SH-RD-A-110, ENG-SH-RD-A-110 FF, ENG-MS-RD-A-30, ENG-MS-RD-A-30 FF, ENG-MS-RD-A-20, ENG-MS-RD-A-20 FF, ENG-MS-RD-A-10, ENG-MS-RD-A-10 FF, ENG-MS-RD-A-40, ENG-MS-RD-A-40 FF, CO-TE-MH-190, CO-TE-MH-190 FF, CO-TE-DW-160, CO-TE-DW-160 FF, CO-SL-CL-300, CO-SL-CL-300 FF, CO-SL-LP-380, CO-SL-LP-380 FF, CON-LV-HC-150, CON-LV-HC-150 FF, CON-LV-ML-150, CON-LV-ML-150 FF, CO-MV-ML-300, CO-MV-ML-300 FF, CO-IR-ML-180, CO-IR-ML-180 FF, CO-PW-FH-190, CO-PW-FH-190 FF, CO-PW-VC-250, CO-PW-VC-250 FF, CO-PW-ML-160, CO-PW-ML-160 FF, CO-TSE-ML-230, CO-TSE-ML-230 FF, CO-SW-ML-160, CO-SW-ML-160 FF, CO-SW-MH-250, CO-SW-MH-250 FF, CO-SD-CB-200, CO-SD-CB-200 FF, CO-SD-ML-160, CO-SD-ML-160 FF, CO-EW-210_R, CO-EW-210_R FF, CO-SL-LP-520, CO-SL-LP-520 FF, CO-SD-CB-TF-190, CO-SD-CB-TF-190 FF, PRO-R25-SD-DL-110, PRO-R25-SD-DL-110 FF, PRO-R25-SD-DL-130, PRO-R25-SD-DL-130 FF, PRO-SD-1DL-130, PRO-SD-1DL-130 FF, PRO-SD-1DL-120, PRO-SD-1DL-120 FF, CO-SD-CB-190, CO-SD-CB-190 FF, ENG-MT-SD-CB-A-110, ENG-MT-SD-CB-A-110 FF, ENG-SH-SD-CB-A-110, ENG-SH-SD-CB-A-110 FF, ENG-MS-SD-CB-A-110, ENG-MS-SD-CB-A-110 FF, MS-CS-SD SS, CO-SD-ML-250, CO-SD-ML-250 FF, CO-SD-CB-180, CO-SD-CB-180 FF, CO-SD-PO-110-P1, CO-SD-PO-110-P1 FF, CO-SD-PO-110-P2, CO-SD-PO-110-P2 FF, CO-SD-ML-TF-110, CO-SD-ML-TF-110 FF, CO-SW-MH-240, CO-SW-MH-240 FF, CO-SW-MH-230, CO-SW-MH-230 FF, PRO-SW-1DL-110, PRO-SW-1DL-110 FF, PRO-R25-SW-DL-110, PRO-R25-SW-DL-110 FF, CO-SW-MH-220, CO-SW-MH-220 FF, ENG-MT-SW-ML-A-100, ENG-MT-SW-ML-A-100 FF, ENG-SH-SW-ML-A-110, ENG-SH-SW-ML-A-110 FF, MS-CS-SW SS, CO-EW-240, CO-EW-240 FF, ENG-MS-SW-ML-A-110, ENG-MS-SW-ML-A-110 FF, CO-SW-MH-210, CO-SW-MH-210 FF, PRO-SW-1DL-100, PRO-SW-1DL-100 FF, PRO-R25-SW-DL-100, PRO-R25-SW-DL-100 FF, CO-SW-ML-150, CO-SW-ML-150 FF, ENG-MT-SW-ML-A-110, ENG-MT-SW-ML-A-110 FF, CO-SW-ML-140, CO-SW-ML-140 FF, CO-SW-TF-230, CO-SW-TF-230 FF, CO-SW-TF-250, CO-SW-TF-250 FF, CO-IR-TF-170, CO-IR-TF-170 FF, CO-IR-ML-190, CO-IR-ML-190 FF, ENG-MT-IR-ML-A-110, ENG-MT-IR-ML-A-110 FF, PRO-IR-1DL-110, PRO-IR-1DL-110 FF, PRO-R25-IR-DL-110, PRO-R25-IR-DL-110 FF, CO-IR-ML-170, CO-IR-ML-170 FF, PRO-IR-1DL-100, PRO-IR-1DL-100 FF, PRO-R25-IR-DL-100, PRO-R25-IR-DL-100 FF, CO-IR-ML-160, CO-IR-ML-160 FF, ENG-SH-IR-ML-A-110, ENG-SH-IR-ML-A-110 FF, ENG-MS-IR-ML-A-110, ENG-MS-IR-ML-A-110 FF, ENG-MT-IR-ML-A-100, ENG-MT-IR-ML-A-100 FF, MS-CS-IR SS, CO-IR-ML-150, CO-IR-ML-150 FF, CO-TE-CTV-TF-180, CO-TE-CTV-TF-180 FF, CO-TE-CTV-TF-310, CO-TE-CTV-TF-310 FF, CO-TE-CTV-240, CO-TE-CTV-240 FF, CO-TE-CTV-150 SS | 5d |
|  | LS | **Pavement Works** |  | 2027-01-14 | 2027-01-30 |  |  |
| CO-RD-PV-240 |  | Fixing of Curbstone for Sidewalks Pavement for Alignment-RD-03-2 | 7d | 2027-01-14 | 2027-01-21 | ENG-MS-HS-A-10, PRO-R25-RD-DL-130, PRO-RD-1DL-150, CO-RD-B-240, CO-RD-PV-180 | 3d |
| CO-RD-PV-250 |  | Fixing of Interlock Tiles for Sidewalks Pavement for Alignment-RD-03-2 | 7d | 2027-01-23 | 2027-01-30 | ENG-MS-HS-A-10, PRO-R25-RD-DL-120, PRO-RD-1DL-140, CO-RD-PV-240, CO-RD-PV-190 | 3d |
|  | TS | **Traffic Signs Boards and Roads Marking** |  | 2027-01-31 | 2027-02-06 |  |  |
| CO-RD-F-RM-220 |  | Application of Road Marking Works For Road Works for Alignment-RD-03-2 | 3d | 2027-01-31 | 2027-02-02 | CO-RD-PV-250, ENG-MS-MRK-A-10, PRO-R25-RD-DL-150, ENG-SH-MRK-A-110, PRO-RD-1DL-170, CO-RD-PV-240, CON-RD-MR-230, CO-RD-F-RM-190 | 3d |
| CO-RD-F-TS-160 |  | Installation Works of Traffic Signs Boards For Road Works for Alignment-RD-03-2 | 3d | 2027-02-03 | 2027-02-06 | CO-RD-F-RM-220, ENG-MS-TSB-A-10, PRO-R25-RD-DL-140, ENG-SH-TSB-A-100, PRO-RD-1DL-160, CO-RD-F-TS-130 | 3d |
|  | 3 | **Finishes for Infrastructure Networks** |  | 2026-11-23 | 2027-01-24 |  |  |
|  | 11 | **Storm Drainage Network** |  | 2027-01-06 | 2027-01-24 |  |  |
|  | TF | **Testing and Finishes** |  | 2027-01-06 | 2027-01-24 |  |  |
| CO-SD-MH-TF-290 |  | Testing Works for Manholes of Storm Drainage Network for Alignment-RD-03-2 | 6d | 2027-01-06 | 2027-01-12 | CO-SD-MH-380, CO-SD-MH-TF-230, PRO-SD-1DL-140, PRO-R25-SD-DL-140, CO-SD-MH-260, PRO-R25-RD-DL-170, PRO-RD-1DL-130, PRO-R25-RD-DL-100, PRO-RD-1DL-100, MS-MM-140, MS-MM-130, MS-CS-RD SS, ENG-SH-RD-A-100, ENG-SH-RD-A-110, ENG-MS-RD-A-30, ENG-MS-RD-A-20, ENG-MS-RD-A-10, ENG-MS-RD-A-40, CO-TE-MH-190, CO-TE-DW-160, CO-SL-CL-300, CO-SL-LP-380, CON-LV-HC-150, CON-LV-ML-150, CO-MV-ML-300, CO-IR-ML-180, CO-PW-FH-190, CO-PW-VC-250, CO-PW-ML-160, CO-TSE-ML-230, CO-SW-ML-160, CO-SW-MH-250, CO-SD-CB-200, CO-SD-ML-160, CO-EW-210_R, CO-SL-LP-520, CO-SD-ML-250, CO-SD-PO-110-P1, CO-SD-PO-110-P2, CO-SD-ML-TF-110 | 15d |
| CO-SD-CB-TF-260 |  | Testing Works for Catch Basins of Storm Drainage Network for Alignment-RD-03-2 | 9d | 2027-01-14 | 2027-01-24 | CO-SD-CB-TF-170, CO-SD-CB-200, PRO-R25-SD-DL-110, PRO-R25-SD-DL-130, PRO-SD-1DL-130, PRO-SD-1DL-120, CO-SD-CB-190, ENG-MT-SD-CB-A-110, ENG-SH-SD-CB-A-110, ENG-MS-SD-CB-A-110, MS-CS-SD SS, CO-SD-ML-250, MS-MM-130, MS-MM-140, CO-SD-CB-180, CO-SD-CB-TF-190, CO-SD-MH-380, PRO-SD-1DL-140, PRO-R25-SD-DL-140, CO-SD-MH-260, PRO-R25-RD-DL-170, PRO-RD-1DL-130, PRO-R25-RD-DL-100, PRO-RD-1DL-100, MS-CS-RD SS, ENG-SH-RD-A-100, ENG-SH-RD-A-110, ENG-MS-RD-A-30, ENG-MS-RD-A-20, ENG-MS-RD-A-10, ENG-MS-RD-A-40, CO-TE-MH-190, CO-TE-DW-160, CO-SL-CL-300, CO-SL-LP-380, CON-LV-HC-150, CON-LV-ML-150, CO-MV-ML-300, CO-IR-ML-180, CO-PW-FH-190, CO-PW-VC-250, CO-PW-ML-160, CO-TSE-ML-230, CO-SW-ML-160, CO-SW-MH-250, CO-SD-ML-160, CO-EW-210_R, CO-SL-LP-520, CO-SD-PO-110-P1, CO-SD-PO-110-P2, CO-SD-ML-TF-110 | 5d |
|  | 10 | **Sewage Network** |  |  |  |  |  |
|  | TF | **Testing and Finishes** |  |  |  |  |  |
|  | 13 | **Irrigation Network** |  |  |  |  |  |
|  | TF | **Testing and Finishes** |  |  |  |  |  |
|  | 14 | **Medium Voltage Network** |  | 2026-11-23 | 2026-11-29 |  |  |
|  | TT | **Termination and Testing Works** |  | 2026-11-23 | 2026-11-29 |  |  |
| CO-MV-TF-260 |  | Testing and Termination Works of Medium Voltage Network for Alignment-RD-03-2 | 6d | 2026-11-23 | 2026-11-29 | CO-MV-ML-390, CO-MV-TF-230 | 23d |
|  | 6 | **Low Voltage Network** |  | 2026-12-16 | 2027-01-06 |  |  |
|  | TT | **Termination and Testing Works** |  | 2026-12-16 | 2027-01-06 |  |  |
| CON-LV-TT-190 |  | Testing and Termination Works for Distribution Pillars Units of Low Voltage Network for Alignment-RD-03-2 | 6d | 2026-12-16 | 2026-12-22 | PRO-LV-TT-1DL-100, PRO-LV-TT-DL-100, CON-LV-DP-240, CO-MV-TF-260, CO-MV-TF-230, PRO-LV-DP-1DL-100, PRO-LV-DP-DL-100, CON-LV-DP-130 | 36d |
| CON-LV-TT-180 |  | Testing and Termination Works for Substation Low Voltage Panel Boards of Low Voltage Network for Alignment-RD-03-2 | 7d | 2026-12-30 | 2027-01-06 | CON-LV-TT-190, PRO-LV-TT-1DL-100, PRO-LV-TT-DL-100, CON-LV-HC-240, CON-LV-ML-240, CON-LV-TT-120 | 30d |
|  | 1 | **Earthing System Works** |  | 2026-12-23 | 2026-12-24 |  |  |
| CON-LV-ES-140 |  | Earthing System Works for Distribution Pillars Units of Low Voltage Network for Alignment-RD-03-2 | 2d | 2026-12-23 | 2026-12-24 | CON-LV-TT-190, PRO-LV-DP-1DL-110, PRO-LV-DP-DL-120, CON-LV-DP-240, PRO-LV-DP-1DL-100, PRO-LV-DP-DL-100, CON-LV-DP-130, PRO-LV-TT-1DL-100, PRO-LV-TT-DL-100, CO-MV-TF-230 | 41d |
|  | 12 | **Street Lighting Network** |  | 2026-12-08 | 2026-12-23 |  |  |
|  | TR | **Termination and Testing Works** |  | 2026-12-08 | 2026-12-23 |  |  |
| CO-SL-LP-530 |  | Installation Works for Lighting Fixtures With Drop Wire of Street Lighting Network for Alignment-RD-03-2 | 6d | 2026-12-08 | 2026-12-14 | ENG-MT-SL-A-120, PRO-R25-SL-DL-140, CO-SL-LP-520, CO-SL-LP-370, PRO-R25-SL-DL-160, CO-SL-CL-390, ENG-MT-SL-DB-A-100, MS-CS-SL SS, MS-MM-130, MS-MM-140, CO-EW-240 | 10d |
| CO-SL-TF-530 |  | Testing Works for Lighting Poles of Street Lighting Network for Alignment-RD-03-2 | 6d | 2026-12-17 | 2026-12-23 | CO-SL-LP-530, PRO-R25-SL-DL-130, PRO-R25-SL-DL-160, CO-SL-LP-520, CO-SL-CL-390, ENG-MT-SL-DB-A-100, MS-CS-SL SS, MS-MM-130, MS-MM-140, CO-EW-240 | 8d |
|  | ES | **Earthing System Works** |  | 2026-12-17 | 2026-12-22 |  |  |
| CO-SL-ES-300 |  | Install Earthing System Works for Lighting Poles of Street Lighting Network for Alignment-RD-03-2 | 3d | 2026-12-17 | 2026-12-20 | CO-SL-LP-530, ENG-MT-SL-ES-A-100, PRO-R25-SL-DL-150 | 43d |
| CO-SL-ES-310 |  | Install Earthing System Works for Lighting Panel Boards of Street Lighting Network for Alignment-RD-03-2 | 2d | 2026-12-21 | 2026-12-22 | CO-SL-ES-300, PRO-R25-SL-DL-150 | 43d |
|  | 3 | **Telecom and Light Current Network** |  | 2027-01-03 | 2027-01-06 |  |  |
|  | 1 | **Testing and Finishes** |  | 2027-01-03 | 2027-01-06 |  |  |
| CO-TE-CTV-TF-320 |  | Testing and Interface modules with CCTV, Telephone, MSN and Access Control for Alignment-RD-03-2 | 4d | 2027-01-03 | 2027-01-06 | CO-TE-CTV-TF-180, CO-TE-CTV-TF-310, CO-TE-CTV-240, CO-TE-CTV-150 SS | 20d |
|  | 4 | **Alignment-RD-03-3** |  | 2026-07-07 | 2027-01-17 |  |  |
|  | EW | **Earthworks** |  | 2026-07-07 | 2026-07-19 |  |  |
|  | EW | **Earthworks** |  | 2026-07-07 | 2026-07-19 |  |  |
| CO-EW-230 |  | Excavation and Backfilling Works Upto Design Level for Earthworks for Alignment-RD-03-3 | 11d | 2026-07-07 | 2026-07-19 | MS-CS-PS SS, MOB-30, MOB-20, MOB-80, MOB-40, MOB-50, MOB-60, MOB-10, MOB-70, PRE-CON-MDC-10, PRE-CON-MDC-20, PRE-CON-MDC-30, PRE-CON-MDC-40, PRE-CON-MDC-50, PRE-CON-MDC-60, PRE-CON-MDC-70, PRE-CON-MDC-80, MS-MM-100, MS-MM-130, MS-MM-140, MS-MM-150, CO-EW-200 | 3d |
|  | SD | **Storm Drainage Network** |  | 2026-08-06 | 2026-08-24 |  |  |
|  | MH | **Manholes** |  |  |  |  |  |
|  | ML | **Main Line Sections** |  | 2026-08-06 | 2026-08-24 |  |  |
| CO-SD-ML-200 |  | Trench Excavation and Bedding Works for Main Lines of Storm Drainage Network for Alignment-RD-03-3 | 3d | 2026-08-06 | 2026-08-09 | CO-EW-230, ENG-SH-SD-ML-A-110, ENG-MS-SD-ML-A-110, ENG-MT-SD-ML-A-110, MS-CS-SD SS, MS-MM-130, MS-MM-140, CO-SD-ML-100, ENG-MT-SD-ML-A-100, ENG-MT-SD-ML-A-100 FF, CO-EW-230 FF, ENG-MS-SD-ML-A-110 FF, ENG-MT-SD-ML-A-110 FF, ENG-SH-SD-ML-A-110 FF, MS-MM-130 FF, MS-MM-140 FF, CO-SD-MH-180, CO-SD-MH-180 FF, PRO-SD-1DL-100, CO-SD-MH-200, PRO-R25-SD-DL-100, CO-SD-MH-190 | 7d |
| CO-SD-ML-210 |  | Pipes Laying Works for Main Lines of Storm Drainage Network for Alignment-RD-03-3 | 3d | 2026-08-17 | 2026-08-19 | CO-SD-ML-200, PRO-R25-SD-DL-120 FF, PRO-SD-1DL-110, CO-SD-ML-120, PRO-SD-1DL-100, CO-SD-MH-200, PRO-R25-SD-DL-100, CO-SD-MH-190, ENG-MT-SD-ML-A-100, MS-CS-SD SS, CO-EW-230, ENG-MS-SD-ML-A-110, ENG-MT-SD-ML-A-110, ENG-SH-SD-ML-A-110, MS-MM-130, MS-MM-140, CO-SD-MH-180 | 1d |
| CO-SD-ML-220 |  | Trench Backfilling and Compaction Works for Main Lines of Storm Drainage Network for Alignment-RD-03-3 | 3d | 2026-08-22 | 2026-08-24 | CO-SD-ML-210, CO-SD-ML-130, CO-SD-MH-220 FF, PRO-SD-1DL-100 FF, CO-SD-MH-200 FF, PRO-R25-SD-DL-100 FF, CO-SD-MH-190 FF, ENG-MT-SD-ML-A-100 FF, CO-EW-230 FF, ENG-MS-SD-ML-A-110 FF, ENG-MT-SD-ML-A-110 FF, ENG-SH-SD-ML-A-110 FF, MS-MM-130 FF, MS-MM-140 FF, CO-SD-MH-180 FF | 0d |
|  | CB | **Catch Basin Sections** |  |  |  |  |  |
|  | SW | **Sewage Network** |  |  |  |  |  |
|  | 1 | **Manholes** |  |  |  |  |  |
|  | ML | **Main Line Sections** |  |  |  |  |  |
|  | TSE | **Treated Sewage Effluent (Tse)** |  | 2026-08-25 | 2026-10-03 |  |  |
| CO-TSE-ML-300 |  | Trench Excavation and Bedding Works for Main Lines of Treated Sewage Effluent (Tse) for Alignment-RD-03-3 | 11d | 2026-08-25 | 2026-09-06 | ENG-SH-TSE-ML-A-120, ENG-MS-TSE-ML-A-120, ENG-MT-IR-ML-A-120, MS-CS-TSE SS, CO-EW-230, MS-MM-130, MS-MM-140, PRO-SW-1DL-110 SS, ENG-MT-SW-ML-A-100, ENG-SH-SW-ML-A-110, MS-CS-SW SS, ENG-MS-SW-ML-A-110, CO-SD-MH-220, PRO-SD-1DL-100, CO-SD-MH-200, PRO-R25-SD-DL-100, CO-SD-MH-190, ENG-MT-SD-ML-A-100, MS-CS-SD SS, ENG-MS-SD-ML-A-110, ENG-MT-SD-ML-A-110, ENG-SH-SD-ML-A-110, CO-SD-MH-180, PRO-SW-1DL-100, ENG-MT-SW-ML-A-110, CO-SD-ML-220 | 21d |
| CO-TSE-ML-310 |  | Pipes Laying Works for Main Lines of Treated Sewage Effluent (Tse) for Alignment-RD-03-3 | 11d | 2026-09-07 | 2026-09-19 | CO-TSE-ML-300, PRO-TSE-1DL-120, PRO-R25-TSE-DL-120 | 21d |

| ID | WBS | Task | Duration | Start | Finish | Predecessors | Total float |
| --- | --- | --- | --- | --- | --- | --- | --- |
| CO-TSE-ML-330 |  | Trench Backfilling and Compaction Works for Treated Sewage Effluent (Tse) for Alignment-RD-03-3 | 11d | 2026-09-20 | 2026-10-03 | CO-TSE-ML-310 | 21d |
|  | PW | **Potable Water Network** |  | 2026-10-04 | 2026-11-16 |  |  |
|  | ML | **Main Line Sections** |  | 2026-10-04 | 2026-11-07 |  |  |
| CO-PW-ML-200 |  | Trench Excavation and Bedding Works for Main Lines of Potable Water Network for Alignment-RD-03-3 | 10d | 2026-10-04 | 2026-10-14 | ENG-SH-PW-ML-A-110, ENG-MS-PW-ML-A-110, ENG-MT-PW-ML-A-100, MS-CS-PW SS, CO-EW-230, MS-MM-130, MS-MM-140, CO-TSE-ML-330, PRO-SW-1DL-110 SS, ENG-MT-SW-ML-A-100, ENG-SH-SW-ML-A-110, MS-CS-SW SS, ENG-MS-SW-ML-A-110, CO-SD-MH-220, PRO-SD-1DL-100, CO-SD-MH-200, PRO-R25-SD-DL-100, CO-SD-MH-190, ENG-MT-SD-ML-A-100, MS-CS-SD SS, ENG-MS-SD-ML-A-110, ENG-MT-SD-ML-A-110, ENG-SH-SD-ML-A-110, CO-SD-MH-180, PRO-SW-1DL-100, ENG-MT-SW-ML-A-110, CO-SD-ML-220 | 21d |
| CO-PW-ML-210 |  | Pipes Laying and accessories for Main Lines of Potable Water Network for Alignment-RD-03-3 | 10d | 2026-10-15 | 2026-10-26 | CO-PW-ML-200, PRO-PW-1DL-100, PRO-R25-PW-DL-100 | 21d |
| CO-PW-ML-220 |  | Trench Backfilling and Compaction Works for Main Lines of Potable Water Network for Alignment-RD-03-3 | 10d | 2026-10-27 | 2026-11-07 | CO-PW-ML-210 | 21d |
|  | VC | **Valve Chamber** |  | 2026-10-04 | 2026-11-16 |  |  |
| CO-PW-VC-290 |  | Excavation Works for Main Line Valves and Valve Chambers of Potable Water Network for Alignment-RD-03-3 | 10d | 2026-10-04 | 2026-10-14 | ENG-MT-PW-ML-A-110, MS-CS-PW SS, CO-PW-ML-200 SS, CO-PW-ML-200 FF, MS-MM-130, MS-MM-140 | 47d |
| CO-PW-VC210 |  | Installation of Valve Chambers of Potable Water Network for Alignment-RD-03-3 | 10d | 2026-10-15 | 2026-10-26 | CO-PW-VC-290, PRO-R25-PW-DL-120 | 47d |
| CO-PW-VC-300 |  | Installation Works for Valves of Potable Water Network for Alignment-RD-03-3 | 9d | 2026-11-03 | 2026-11-12 | CO-PW-VC210, PRO-PW-1DL-110, PRO-R25-PW-DL-110, CO-PW-VC-190 | 41d |
| CO-PW-VC-310 |  | Backfilling Works for Main Line Valves and Valve Chambers of Potable Water Network for Alignment-RD-03-3 | 3d | 2026-11-14 | 2026-11-16 | CO-PW-VC-300, CO-PW-ML-220 FF, CO-PW-VC-220 SS | 41d |
|  | FH | **Fire Hydrant** |  | 2026-10-15 | 2026-11-16 |  |  |
| CO-PW-FH-230 |  | Excavation Works for Fire Hydrants of Potable Water Network for Alignment-RD-03-3 | 10d | 2026-10-15 | 2026-10-26 | CO-PW-VC-290, ENG-SH-PW-FH-A-110, ENG-MT-PW-FH-A-100, MS-CS-PW SS, CO-EW-230, MS-MM-130, MS-MM-140, CO-PW-FH-140 | 47d |
| CO-PW-FH-240 |  | Installation Works for Fire Hydrant of Potable Water Network for Alignment-RD-03-3 | 10d | 2026-10-27 | 2026-11-07 | CO-PW-FH-230, PRO-PW-1DL-120, CO-PW-ML-210, CO-PW-FH-150 | 47d |
| CO-PW-FH-250 |  | Trench Backfilling and Compaction Works for Fire Hydrants of Potable Water Network for Alignment-RD-03-3 | 2d | 2026-11-15 | 2026-11-16 | CO-PW-FH-240, CO-PW-VC-310 FF, CO-PW-FH-160 SS | 41d |
|  | IR | **Irrigation Network** |  | 2026-10-15 | 2026-11-09 |  |  |
|  | ML | **Main Line Pipes** |  | 2026-10-15 | 2026-11-09 |  |  |
| CO-IR-ML-350 |  | Trench Excavation and Bedding Works for Main Lines of Irrigation Network for Alignment-RD-03-3 | 10d | 2026-10-15 | 2026-10-26 | ENG-SH-IR-ML-A-110, ENG-MS-IR-ML-A-110, ENG-MT-IR-ML-A-100, MS-CS-IR SS, MS-MM-130, MS-MM-140, CO-EW-230, CO-PW-ML-200 | 25d |
| CO-IR-ML-360 |  | Pipes Laying Works for Main Lines of Irrigation Network for Alignment-RD-03-3 | 3d | 2026-10-27 | 2026-10-29 | CO-IR-ML-350, PRO-IR-1DL-100, PRO-R25-IR-DL-100, CO-PW-ML-210 | 25d |
| CO-IR-ML-370 |  | Installation Works for Main Line Valves of Irrigation Network for Alignment-RD-03-3 | 3d | 2026-10-31 | 2026-11-02 | CO-IR-ML-360, ENG-MT-IR-ML-A-110, PRO-IR-1DL-110, PRO-R25-IR-DL-110 | 25d |
| CO-IR-ML-390 |  | Installation Works for Bulbblers And Sprinkler and Irrigation Control System of Irrigation Network for Alignment-RD-03-3 | 3d | 2026-11-03 | 2026-11-05 | CO-IR-ML-370 | 25d |
| CO-IR-ML-380 |  | Trench Backfilling and Compaction Works for Main Lines of Irrigation Network for Alignment-RD-03-3 | 3d | 2026-11-07 | 2026-11-09 | CO-IR-ML-390 | 25d |
|  | MV | **Medium Voltage Network** |  | 2026-11-10 | 2026-11-23 |  |  |
|  | CW | **Cabling Works** |  | 2026-11-10 | 2026-11-23 |  |  |
| CO-MV-ML-340 |  | Trench Excavation and Bedding Works for Medium Voltage Network for Alignment-RD-03-3 | 3d | 2026-11-10 | 2026-11-12 | ENG-SH-MV-A-110, ENG-MS-MV-A-110, MS-CS-MV SS, CO-SD-ML-220, CO-EW-230, MS-MM-130, MS-MM-140, CO-PW-ML-220, CO-MV-ML-370, CO-SD-MH-220, PRO-SD-1DL-100, CO-SD-MH-200, PRO-R25-SD-DL-100, CO-SD-MH-190, ENG-MT-SD-ML-A-100, MS-CS-SD SS, ENG-MS-SD-ML-A-110, ENG-MT-SD-ML-A-110, ENG-SH-SD-ML-A-110, CO-SD-MH-180, CO-SD-ML-130, PRO-R25-SD-DL-110, PRO-R25-SD-DL-130, PRO-SD-1DL-130, PRO-SD-1DL-120, ENG-MT-SD-CB-A-110, ENG-SH-SD-CB-A-110, ENG-MS-SD-CB-A-110, PRO-SW-1DL-110 SS, ENG-MT-SW-ML-A-100, ENG-SH-SW-ML-A-110, MS-CS-SW SS, ENG-MS-SW-ML-A-110, PRO-SW-1DL-100, ENG-MT-SW-ML-A-110 | 19d |
| CO-MV-ML-350 |  | Duct Laying Works for Medium Voltage Network for Alignment-RD-03-3 | 3d | 2026-11-17 | 2026-11-19 | CO-MV-ML-340, PRO-MV-DL-100, PRO-MV-1DL-100, CO-MV-ML-380 | 16d |
| CO-MV-ML-360 |  | Trench Backfilling and Compaction Works for Medium Voltage Network for Alignment-RD-03-3 | 3d | 2026-11-21 | 2026-11-23 | CO-MV-ML-350 | 16d |
|  | LV | **Low Voltage Network** |  | 2026-11-24 | 2026-12-26 |  |  |
|  | MLVC | **Main Low Voltage Cables Works ( Cable 300 MM )** |  | 2026-11-24 | 2026-12-14 |  |  |
| CON-LV-ML-190 |  | Trench Excavation and Bedding Works for Main Cable of Low Voltage Network for Alignment-RD-03-3 | 7d | 2026-11-24 | 2026-12-01 | CO-PW-ML-220, ENG-SH-LV-A-120, ENG-MS-MV-A-120, MS-CS-LV SS, CO-MV-ML-360, CO-EW-230, MS-MM-130, MS-MM-140, CON-LV-ML-100, CO-SD-ML-130, PRO-R25-SD-DL-110, PRO-R25-SD-DL-130, PRO-SD-1DL-130, PRO-SD-1DL-120, ENG-MT-SD-CB-A-110, ENG-SH-SD-CB-A-110, ENG-MS-SD-CB-A-110, MS-CS-SD SS, CO-SD-ML-220, PRO-SW-1DL-110 SS, ENG-MT-SW-ML-A-100, ENG-SH-SW-ML-A-110, MS-CS-SW SS, ENG-MS-SW-ML-A-110, CO-SD-MH-220, PRO-SD-1DL-100, CO-SD-MH-200, PRO-R25-SD-DL-100, CO-SD-MH-190, ENG-MT-SD-ML-A-100, ENG-MS-SD-ML-A-110, ENG-MT-SD-ML-A-110, ENG-SH-SD-ML-A-110, CO-SD-MH-180, PRO-SW-1DL-100, ENG-MT-SW-ML-A-110 | 28d |
| CON-LV-ML-200 |  | Cable Laying Works for Main Cable of Low Voltage Network for Alignment-RD-03-3 | 7d | 2026-12-02 | 2026-12-09 | CON-LV-ML-190, PRO-LV-ML-1DL-100, PRO-LV-ML-DL-100, CON-LV-ML-110 | 28d |
| CON-LV-ML-210 |  | Trench Backfilling and Compaction Works for Main Cable of Low Voltage Network for Alignment-RD-03-3 | 4d | 2026-12-10 | 2026-12-14 | CON-LV-ML-200, CON-LV-ML-120 | 34d |
|  | SLVC | **Service Low Voltage Cables Works ( Cable 70 MM )** |  | 2026-12-02 | 2026-12-21 |  |  |
| CON-LV-HC-190 |  | Trench Excavation and Bedding Works for Service Cable of Low Voltage Network for Alignment-RD-03-3 | 7d | 2026-12-02 | 2026-12-09 | CON-LV-ML-190, ENG-MS-MV-A-120, MS-CS-LV SS, CO-EW-230, ENG-SH-LV-A-120, MS-MM-130, MS-MM-140, CO-PW-ML-220, CO-PW-VC-310, CO-PW-FH-250, CO-TSE-ML-330, CO-SD-ML-220, CON-LV-HC-100, CO-SD-MH-220, PRO-SD-1DL-100, CO-SD-MH-200, PRO-R25-SD-DL-100, CO-SD-MH-190, ENG-MT-SD-ML-A-100, MS-CS-SD SS, ENG-MS-SD-ML-A-110, ENG-MT-SD-ML-A-110, ENG-SH-SD-ML-A-110, CO-SD-MH-180, CO-SD-ML-130, PRO-R25-SD-DL-110, PRO-R25-SD-DL-130, PRO-SD-1DL-130, PRO-SD-1DL-120, ENG-MT-SD-CB-A-110, ENG-SH-SD-CB-A-110, ENG-MS-SD-CB-A-110, PRO-SW-1DL-110 SS, ENG-MT-SW-ML-A-100, ENG-SH-SW-ML-A-110, MS-CS-SW SS, ENG-MS-SW-ML-A-110, PRO-SW-1DL-100, ENG-MT-SW-ML-A-110 | 28d |
| CON-LV-HC-200 |  | Cable Laying Works for Service Cable of Low Voltage Network for Alignment-RD-03-3 | 7d | 2026-12-10 | 2026-12-17 | CON-LV-HC-190, CON-LV-ML-200, PRO-LV-HC-1DL-100, PRO-LV-HC-DL-100, CON-LV-HC-110 | 28d |
| CON-LV-HC-210 |  | Trench Backfilling and Compaction Works for Service Cable of Low Voltage Network for Alignment-RD-03-3 | 3d | 2026-12-19 | 2026-12-21 | CON-LV-HC-200, CON-LV-ML-210 FF, CON-LV-HC-120 | 28d |
|  | DP | **Distribution Pillars Works** |  | 2026-12-22 | 2026-12-26 |  |  |
| CON-LV-DP-190 |  | Installation Works for Distribution Pillar Units of Low Voltage Network for Alignment-RD-03-3 | 4d | 2026-12-22 | 2026-12-26 | ENG-MS-MV-A-120, MS-CS-LV SS, CO-EW-230, MS-MM-130, MS-MM-140, CON-LV-DP-100, CON-LV-HC-210 | 32d |
|  | SL | **Street Lighting Network** |  | 2026-11-24 | 2026-12-14 |  |  |
|  | LP | **Lighting Poles Works** |  | 2026-11-24 | 2026-12-14 |  |  |
| CO-SL-LP-450 |  | Installation Works for Lighting Poles Foundation of Street Lighting Network for Alignment-RD-03-3 | 6d | 2026-11-24 | 2026-11-30 | PRO-R25-SL-DL-110, ENG-SH-SL-A-110, ENG-MS-SL-A-110, ENG-MT-SL-A-100, MS-CS-SL SS, CO-EW-230, MS-MM-130, MS-MM-140, CO-MV-ML-360 | 30d |
| CO-SL-LP-460 |  | Installation Works for Lighting Poles of Street Lighting Network for Alignment-RD-03-3 | 6d | 2026-12-01 | 2026-12-07 | CO-SL-LP-450, ENG-MT-SL-A-110, PRO-R25-SL-DL-120 | 30d |
| CO-SL-LP-480 |  | Backfilling Works for Lighting Poles of Street Lighting Network for Alignment-RD-03-3 | 6d | 2026-12-08 | 2026-12-14 | CO-SL-LP-460 | 30d |
|  | CW | **Cabling Works** |  | 2026-12-08 | 2026-12-14 |  |  |
| CO-SL-CL-350 |  | Cable Laying Works for Street Lighting Network for Alignment-RD-03-3 | 6d | 2026-12-08 | 2026-12-14 | PRO-R25-SL-DL-100, ENG-SH-SL-A-110, ENG-MS-SL-A-110, ENG-MT-SL-ML-A-100, PRO-SL-1DL-100, MS-CS-SL SS, MS-MM-130, MS-MM-140, CO-SL-LP-460, CO-MV-ML-360, CO-PW-ML-220, CO-PW-FH-250, CO-SD-ML-220, CO-EW-230, CO-IR-ML-380, CO-SD-MH-220, PRO-SD-1DL-100, CO-SD-MH-200, PRO-R25-SD-DL-100, CO-SD-MH-190, ENG-MT-SD-ML-A-100, MS-CS-SD SS, ENG-MS-SD-ML-A-110, ENG-MT-SD-ML-A-110, ENG-SH-SD-ML-A-110, CO-SD-MH-180, CO-SD-ML-130, PRO-R25-SD-DL-110, PRO-R25-SD-DL-130, PRO-SD-1DL-130, PRO-SD-1DL-120, ENG-MT-SD-CB-A-110, ENG-SH-SD-CB-A-110, ENG-MS-SD-CB-A-110, PRO-SW-1DL-110 SS, ENG-MT-SW-ML-A-100, ENG-SH-SW-ML-A-110, MS-CS-SW SS, ENG-MS-SW-ML-A-110, PRO-SW-1DL-100, ENG-MT-SW-ML-A-110 | 30d |
| CO-SL-CL-360 |  | Trench Backfilling and Compaction Works for Street Lighting Network for Alignment-RD-03-3 | 6d | 2026-12-08 | 2026-12-14 | CO-SL-CL-350 SS, CO-SL-LP-480 FF, CO-SL-CL-350 FF | 30d |
|  | DPB | **Distrubution Panel Boards** |  |  |  |  |  |
|  | TE | **Telecom and Light Current Network** |  | 2026-12-03 | 2027-01-02 |  |  |
|  | PD | **Ducts Works** |  | 2026-12-22 | 2027-01-02 |  |  |
| CO-TE-DW-230 |  | Pipes Laying Works for Ducts of Telecom Network for Alignment-RD-03-3 | 6d | 2026-12-22 | 2026-12-28 | PRO-R25-TE-DL-100, CO-TE-DW-110 SS, ENG-SH-TE-A-110, ENG-MS-TE-A-110, ENG-MT-TE-A-100, PRO-TE-1DL-100, MS-CS-TE SS, MS-MM-130, MS-MM-140, CO-SD-ML-220, CO-PW-ML-220, CO-PW-VC-310, CO-PW-FH-250, CO-MV-ML-360, CON-LV-ML-210, CON-LV-HC-210, CO-SL-LP-480, CO-SL-CL-360, CO-EW-230, CO-IR-ML-380, CO-SD-MH-220, CO-SD-ML-130, CO-PW-ML-130, CO-PW-VC-220, CO-PW-FH-160, CON-LV-ML-120, CON-LV-HC-120, CO-EW-200, CO-SL-LP-570, CO-SL-CL-420, PRO-R25-SD-DL-110, PRO-R25-SD-DL-130, PRO-SD-1DL-130, PRO-SD-1DL-120, ENG-MT-SD-CB-A-110, ENG-SH-SD-CB-A-110, ENG-MS-SD-CB-A-110, MS-CS-SD SS, PRO-SW-1DL-110, PRO-R25-SW-DL-110, ENG-MT-SW-ML-A-100, ENG-SH-SW-ML-A-110, MS-CS-SW SS, ENG-MS-SW-ML-A-110, PRO-SW-1DL-100, PRO-R25-SW-DL-100, ENG-MT-SW-ML-A-110, ENG-MT-IR-ML-A-110, PRO-IR-1DL-110, PRO-R25-IR-DL-110, PRO-IR-1DL-100, CO-PW-ML-110, PRO-R25-IR-DL-100, ENG-SH-IR-ML-A-110, ENG-MS-IR-ML-A-110, ENG-MT-IR-ML-A-100, CO-PW-ML-100, MS-CS-IR SS, PRO-R25-SL-DL-160, ENG-MT-SL-DB-A-100, MS-CS-SL SS, PRO-SD-1DL-100, CO-SD-MH-200, PRO-R25-SD-DL-100, CO-SD-MH-190, ENG-MT-SD-ML-A-100, ENG-MS-SD-ML-A-110, ENG-MT-SD-ML-A-110, ENG-SH-SD-ML-A-110, CO-SD-MH-180, PRO-SW-1DL-110 SS | 28d |
| CO-TE-DW-240 |  | Trench Backfilling and Compaction Works for Ducts of Telecom Network for Alignment-RD-03-3 | 4d | 2026-12-29 | 2027-01-02 | CO-TE-MH-250 FF, CO-TE-DW-130 SS, CO-TE-DW-230, CO-TE-DW-110 | 28d |
|  | MH | **Manholes Works** |  | 2026-12-03 | 2026-12-12 |  |  |
| CO-TE-MH-230 |  | Excavation Works for Manholes of Telecom Network for Alignment-RD-03-3 | 2d | 2026-12-03 | 2026-12-05 | ENG-SH-TE-A-110, ENG-MS-TE-A-110, ENG-MT-TE-A-110, PRO-TE-1DL-110, MS-CS-TE SS, MS-MM-130, MS-MM-140, CO-TE-MH-140, ENG-MT-TE-A-100, PRO-TE-1DL-100, CO-SD-ML-220, CO-PW-ML-220, CO-PW-VC-310, CO-PW-FH-250, CO-MV-ML-360, CO-EW-230, CO-IR-ML-380, CO-SD-MH-220, CO-SD-ML-130, CO-PW-ML-130, CO-PW-VC-220, CO-PW-FH-160, CON-LV-ML-120, CON-LV-HC-120, CO-EW-200, CO-SL-LP-570, CO-SL-CL-420, PRO-R25-SD-DL-110, PRO-R25-SD-DL-130, PRO-SD-1DL-130, PRO-SD-1DL-120, ENG-MT-SD-CB-A-110, ENG-SH-SD-CB-A-110, ENG-MS-SD-CB-A-110, MS-CS-SD SS, PRO-SW-1DL-110, PRO-R25-SW-DL-110, ENG-MT-SW-ML-A-100, ENG-SH-SW-ML-A-110, MS-CS-SW SS, ENG-MS-SW-ML-A-110, PRO-SW-1DL-100, PRO-R25-SW-DL-100, ENG-MT-SW-ML-A-110, ENG-MT-IR-ML-A-110, PRO-IR-1DL-110, PRO-R25-IR-DL-110, PRO-IR-1DL-100, CO-PW-ML-110, PRO-R25-IR-DL-100, ENG-SH-IR-ML-A-110, ENG-MS-IR-ML-A-110, ENG-MT-IR-ML-A-100, CO-PW-ML-100, MS-CS-IR SS, PRO-R25-SL-DL-160, ENG-MT-SL-DB-A-100, MS-CS-SL SS, PRO-SD-1DL-100, CO-SD-MH-200, PRO-R25-SD-DL-100, CO-SD-MH-190, ENG-MT-SD-ML-A-100, ENG-MS-SD-ML-A-110, ENG-MT-SD-ML-A-110, ENG-SH-SD-ML-A-110, CO-SD-MH-180, PRO-SW-1DL-110 SS | 31d |
| CO-TE-MH-240 |  | Installation Works for Manholes of Telecom Network for Alignment-RD-03-3 | 3d | 2026-12-06 | 2026-12-08 | CO-TE-MH-230, PRO-R25-TE-DL-110, CO-TE-MH-150 | 31d |
| CO-TE-MH-250 |  | Backfilling Works for Manholes of Telecom Network for Alignment-RD-03-3 | 3d | 2026-12-09 | 2026-12-12 | CO-TE-MH-240, CO-TE-MH-160 | 31d |
|  | DD | **CCTV, Telephone, MSN, ACs System Works** |  | 2026-12-13 | 2026-12-15 |  |  |
| CO-TE-CTV-210 |  | Installation of CCTV, Telephone, ACS and MSN Systems Cables for Alignment-RD-03-3 | 3d | 2026-12-13 | 2026-12-15 | PRO-R25-CTV-DL-100, CO-TE-CTV-110, CO-TE-MH-250, ENG-SH-MSN-A-120, ENG-SH-CTV-A-110, ENG-MS-CTV-A-110, ENG-MT-CTV-A-100, PRO-CTV-1DL-100, MS-CS-TE SS, MS-MM-130, MS-MM-140, CO-TE-MH-160 | 31d |
|  | RD | **Road Works** |  | 2026-12-29 | 2027-01-06 |  |  |
|  | RD | **Roads Works** |  |  |  |  |  |
|  | LS | **Pavement Works** |  | 2026-12-29 | 2027-01-02 |  |  |
| CO-RD-PV-220 |  | Fixing of Curbstone for Sidewalks Pavement for Alignment-RD-03-3 | 4d | 2026-12-29 | 2027-01-02 | ENG-MS-HS-A-10, PRO-R25-RD-DL-130, PRO-RD-1DL-150, CO-RD-PV-160, PRO-R25-RD-DL-110, PRO-RD-1DL-110, CO-RD-PB-150 SS, CO-EW-230, CO-SD-ML-220, CO-PW-ML-220, CO-PW-VC-310, CO-TSE-ML-330, CO-MV-ML-360, CO-SL-LP-480, CO-SL-CL-360, ENG-MS-RD-A-20, ENG-MS-RD-A-30, ENG-MS-RD-A-40, PRO-R25-RD-DL-100, CON-LV-HC-210, CON-LV-ML-210, ENG-MS-RD-A-10, ENG-SH-RD-A-100, ENG-SH-RD-A-110, MS-CS-RD SS, PRO-RD-1DL-100, MS-MM-130, MS-MM-140, CO-PW-FH-250, CO-TE-MH-250, CO-RD-PB-140, CO-IR-ML-380, CO-SD-MH-220, PRO-SD-1DL-100, CO-SD-MH-200, PRO-R25-SD-DL-100, CO-SD-MH-190, ENG-MT-SD-ML-A-100, MS-CS-SD SS, ENG-MS-SD-ML-A-110, ENG-MT-SD-ML-A-110, ENG-SH-SD-ML-A-110, CO-SD-MH-180, CO-SD-ML-130, PRO-R25-SD-DL-110, PRO-R25-SD-DL-130, PRO-SD-1DL-130, PRO-SD-1DL-120, ENG-MT-SD-CB-A-110, ENG-SH-SD-CB-A-110, ENG-MS-SD-CB-A-110, PRO-SW-1DL-110 SS, ENG-MT-SW-ML-A-100, ENG-SH-SW-ML-A-110, MS-CS-SW SS, ENG-MS-SW-ML-A-110, PRO-SW-1DL-100, ENG-MT-SW-ML-A-110, PRO-LV-DP-1DL-100, PRO-LV-DP-DL-100, CON-LV-DP-120, CON-LV-DP-190, CON-LV-DP-110, ENG-SH-MSN-A-120, ENG-SH-CTV-A-110, ENG-MS-CTV-A-110, ENG-MT-CTV-A-100, PRO-CTV-1DL-100, MS-CS-TE SS, CO-TE-MH-160, CO-TE-CTV-110 | 30d |
| CO-RD-PV-230 |  | Fixing of Interlock Tiles for Sidewalks Pavement for Alignment-RD-03-3 | 4d | 2026-12-29 | 2027-01-02 | ENG-MS-HS-A-10, PRO-R25-RD-DL-120, PRO-RD-1DL-140, CO-RD-PV-220 SS, CO-RD-PV-170 SS | 30d |
|  | TS | **Traffic Signs Boards and Roads Marking** |  | 2026-12-29 | 2027-01-06 |  |  |
| CO-RD-F-RM-210 |  | Application of Road Marking Works For Road Works for Alignment-RD-03-3 | 3d | 2026-12-29 | 2026-12-31 | CO-RD-PV-230 SS, ENG-MS-MRK-A-10, PRO-R25-RD-DL-150, ENG-SH-MRK-A-110, PRO-RD-1DL-170, CO-RD-PV-220 SS, CO-RD-F-RM-180 SS, PRO-R25-RD-DL-110, PRO-RD-1DL-110, CO-RD-PB-150 SS, CO-TE-CTV-210, CO-EW-230, CO-SD-ML-220, CO-PW-ML-220, CO-PW-VC-310, CO-TSE-ML-330, CO-MV-ML-360, CO-SL-LP-480, CO-SL-CL-360, ENG-MS-RD-A-20, ENG-MS-RD-A-30, ENG-MS-RD-A-40, PRO-R25-RD-DL-100, CON-LV-HC-210, CON-LV-ML-210, ENG-MS-RD-A-10, ENG-SH-RD-A-100, ENG-SH-RD-A-110, MS-CS-RD SS, PRO-RD-1DL-100, MS-MM-130, MS-MM-140, CO-PW-FH-250, CO-TE-MH-250, CO-RD-PB-140, CO-IR-ML-380, CO-SD-MH-220, PRO-SD-1DL-100, CO-SD-MH-200, PRO-R25-SD-DL-100, CO-SD-MH-190, ENG-MT-SD-ML-A-100, MS-CS-SD SS, ENG-MS-SD-ML-A-110, ENG-MT-SD-ML-A-110, ENG-SH-SD-ML-A-110, CO-SD-MH-180, CO-SD-ML-130, PRO-R25-SD-DL-110, PRO-R25-SD-DL-130, PRO-SD-1DL-130, PRO-SD-1DL-120, ENG-MT-SD-CB-A-110, ENG-SH-SD-CB-A-110, ENG-MS-SD-CB-A-110, PRO-SW-1DL-110 SS, ENG-MT-SW-ML-A-100, ENG-SH-SW-ML-A-110, MS-CS-SW SS, ENG-MS-SW-ML-A-110, PRO-SW-1DL-100, ENG-MT-SW-ML-A-110, PRO-LV-DP-1DL-100, PRO-LV-DP-DL-100, CON-LV-DP-120, CON-LV-DP-190, CON-LV-DP-110, ENG-SH-MSN-A-120, ENG-SH-CTV-A-110, ENG-MS-CTV-A-110, ENG-MT-CTV-A-100, PRO-CTV-1DL-100, MS-CS-TE SS, CO-TE-MH-160, CO-TE-CTV-110 | 30d |
| CO-RD-F-TS-150 |  | Installation Works of Traffic Signs Boards For Road Works for Alignment-RD-03-3 | 4d | 2027-01-03 | 2027-01-06 | CO-RD-F-RM-210, ENG-MS-TSB-A-10, PRO-R25-RD-DL-140, ENG-SH-TSB-A-100, PRO-RD-1DL-160, CO-RD-F-TS-120, PRO-R25-RD-DL-110, PRO-RD-1DL-110, CO-RD-PB-150 SS, CO-IR-TF-210, CO-TE-CTV-210, CO-EW-230, CO-SD-ML-220, CO-PW-ML-220, CO-PW-VC-310, CO-TSE-ML-330, CO-MV-ML-360, CO-SL-LP-480, CO-SL-CL-360, ENG-MS-RD-A-20, ENG-MS-RD-A-30, ENG-MS-RD-A-40, PRO-R25-RD-DL-100, CON-LV-HC-210, CON-LV-ML-210, ENG-MS-RD-A-10, ENG-SH-RD-A-100, ENG-SH-RD-A-110, MS-CS-RD SS, PRO-RD-1DL-100, MS-MM-130, MS-MM-140, CO-TE-DW-240, CO-PW-FH-250, CO-TE-MH-250, CO-RD-PB-140, CO-IR-ML-380, CO-SD-MH-220, PRO-SD-1DL-100, CO-SD-MH-200, PRO-R25-SD-DL-100, CO-SD-MH-190, ENG-MT-SD-ML-A-100, MS-CS-SD SS, ENG-MS-SD-ML-A-110, ENG-MT-SD-ML-A-110, ENG-SH-SD-ML-A-110, CO-SD-MH-180, CO-SD-ML-130, PRO-R25-SD-DL-110, PRO-R25-SD-DL-130, PRO-SD-1DL-130, PRO-SD-1DL-120, ENG-MT-SD-CB-A-110, ENG-SH-SD-CB-A-110, ENG-MS-SD-CB-A-110, PRO-SW-1DL-110 SS, ENG-MT-SW-ML-A-100, ENG-SH-SW-ML-A-110, MS-CS-SW SS, ENG-MS-SW-ML-A-110, PRO-SW-1DL-100, ENG-MT-SW-ML-A-110, PRO-LV-DP-1DL-100, PRO-LV-DP-DL-100, CON-LV-DP-120, CON-LV-DP-190, CON-LV-DP-110, ENG-SH-MSN-A-120, ENG-SH-CTV-A-110, ENG-MS-CTV-A-110, ENG-MT-CTV-A-100, PRO-CTV-1DL-100, MS-CS-TE SS, CO-TE-MH-160, CO-TE-CTV-110 | 29d |
|  | 3 | **Finishes for Infrastructure Networks** |  | 2026-11-24 | 2027-01-17 |  |  |
|  | 11 | **Storm Drainage Network** |  | 2027-01-02 | 2027-01-06 |  |  |
|  | TF | **Testing and Finishes** |  | 2027-01-02 | 2027-01-06 |  |  |
| CO-SD-ML-TF-130 |  | Testing Work for Pipes of Storm Drainage Network for Alignment-RD-03-3 | 5d | 2027-01-02 | 2027-01-06 | CO-SD-ML-220, CO-SD-PO-110-P1, CO-SD-PO-110-P2, CO-SD-ML-TF-100 | 10d |
|  | 10 | **Sewage Network** |  |  |  |  |  |

| ID | WBS | Task | Duration | Start | Finish | Predecessors | Complete | Total float |
| --- | --- | --- | --- | --- | --- | --- | --- | --- |
|  | TF | **Testing and Finishes** |  |  |  |  |  |  |
|  | 9 | **Potable Water Network** |  | 2026-12-22 | 2026-12-29 |  |  |  |
|  | TF | **Testing and Finishes** |  | 2026-12-22 | 2026-12-29 |  |  |  |
| CO-PW-TF-200 |  | Fire Hydrant Finishies (S.Box + Safety + Marker Post ) of Potable Water Network for Alignment-RD-03-3 | 3d | 2026-12-22 | 2026-12-24 | CO-PW-FH-250, ENG-MT-PW-TF-A-100, CO-PW-TF-120 SS |  | 14d |
| CO-PW-TF-190 |  | Testing of Potable Water Network for Alignment-RD-03-3 | 3d | 2026-12-26 | 2026-12-28 | CO-PW-ML-220, CO-PW-TF-210 SS, CO-PW-TF-110 SS, CO-IR-ML-390 |  | 26d |
| CO-PW-TF-210 |  | Final Finishes works and Covers for Valves and Valve Chambers for Alignment-RD-03-3 | 4d | 2026-12-26 | 2026-12-29 | CO-PW-VC-310, ENG-MT-PW-TF-A-100, PRO-PW-1DL-130, PRO-R25-PW-DL-130, CO-PW-TF-200, CO-PW-TF-100 SS |  | 21d |
|  | 1 | **Treated Sewage Effluent (Tse)** |  | 2027-01-11 | 2027-01-17 |  |  |  |
|  | TF | **Testing and Finishes** |  | 2027-01-11 | 2027-01-17 |  |  |  |
| CO-TSE-TF-200 |  | Final Testing (pressure tests) of Treated Sewage Effluent (Tse) for Alignment-RD-03-3 | 6d | 2027-01-11 | 2027-01-17 | CO-TSE-ML-330, CO-TSE-TF-170, CO-PW-TF-190 |  | 15d |
|  | 13 | **Irrigation Network** |  | 2026-12-26 | 2026-12-31 |  |  |  |
|  | TF | **Testing and Finishes** |  | 2026-12-26 | 2026-12-31 |  |  |  |
| CO-IR-TF-210 |  | Final Testing (pressure tests) of Irrigation Network for Alignment-RD-03-3 | 6d | 2026-12-26 | 2026-12-31 | CO-IR-ML-390, CO-PW-TF-190 SS |  | 29d |
|  | 14 | **Medium Voltage Network** |  | 2026-11-24 | 2026-11-30 |  |  |  |
|  | TT | **Termination and Testing Works** |  | 2026-11-24 | 2026-11-30 |  |  |  |
| CO-MV-TF-250 |  | Testing and Termination Works of Medium Voltage Network for Alignment-RD-03-3 | 6d | 2026-11-24 | 2026-11-30 | CO-MV-ML-360 |  | 16d |
|  | 6 | **Low Voltage Network** |  | 2026-12-27 | 2027-01-02 |  |  |  |
|  | TT | **Termination and Testing Works** |  | 2026-12-27 | 2027-01-02 |  |  |  |
| CON-LV-TT-160 |  | Testing and Termination Works for Substation Low Voltage Panel Boards of Low Voltage Network for Alignment-RD-03-3 | 6d | 2026-12-27 | 2027-01-02 | PRO-LV-TT-1DL-100, PRO-LV-TT-DL-100, CON-LV-HC-210, CON-LV-ML-210, CON-LV-TT-100, CON-LV-TT-110, CO-MV-TF-250, PRO-LV-DP-1DL-100, PRO-LV-DP-DL-100, CON-LV-DP-120, CON-LV-DP-190, CON-LV-DP-110 |  | 34d |
|  | 1 | **Earthing System Works** |  |  |  |  |  |  |
|  | 12 | **Street Lighting Network** |  | 2026-12-22 | 2027-01-10 |  |  |  |
|  | TR | **Termination and Testing Works** |  | 2026-12-22 | 2027-01-10 |  |  |  |
| CO-SL-LP-470 |  | Installation Works for Lighting Fixtures With Drop Wire of Street Lighting Network for Alignment-RD-03-3 | 6d | 2026-12-22 | 2026-12-28 | CO-SL-LP-480, ENG-MT-SL-A-120, PRO-R25-SL-DL-140, CO-SL-LP-370, CO-SL-LP-580, PRO-R25-SL-DL-160, CO-SL-CL-360, ENG-MT-SL-DB-A-100, MS-CS-SL SS, CO-EW-230, MS-MM-130, MS-MM-140 |  | 24d |
| CO-SL-TF-490 |  | Testing Works for Lighting Poles of Street Lighting Network for Alignment-RD-03-3 | 6d | 2027-01-04 | 2027-01-10 | CO-SL-LP-470, CO-SL-ES-290, PRO-R25-SL-DL-130, CO-SL-TF-410, CO-SL-TF-570, PRO-R25-SL-DL-160, CO-SL-LP-480, CO-SL-CL-360, ENG-MT-SL-DB-A-100, MS-CS-SL SS, CO-EW-230, MS-MM-130, MS-MM-140 |  | 27d |
|  | ES | **Earthing System Works** |  | 2026-12-22 | 2027-01-03 |  |  |  |
| CO-SL-ES-280 |  | Install Earthing System Works for Lighting Poles of Street Lighting Network for Alignment-RD-03-3 | 6d | 2026-12-22 | 2026-12-28 | CO-SL-LP-470 SS, ENG-MT-SL-ES-A-100, PRO-R25-SL-DL-150, CO-SL-ES-240 SS, CO-SL-ES-320 SS |  | 24d |
| CO-SL-ES-290 |  | Install Earthing System Works for Lighting Panel Boards of Street Lighting Network for Alignment-RD-03-3 | 6d | 2026-12-28 | 2027-01-03 | CO-SL-ES-280 SS, PRO-R25-SL-DL-150, CO-SL-ES-250, CO-SL-ES-330 |  | 25d |
|  | 3 | **Telecom and Light Current Network** |  | 2026-12-17 | 2026-12-30 |  |  |  |
|  | 1 | **Testing and Finishes** |  | 2026-12-17 | 2026-12-30 |  |  |  |
| CO-TE-CTV-TF-260 |  | Testing and Interface modules with Telecom for Alignment-RD-03-3 | 6d | 2026-12-17 | 2026-12-23 | CO-TE-CTV-TF-140, CO-TE-CTV-TF-330, CO-TE-CTV-210, CO-TE-CTV-110 |  | 30d |
| CO-TE-CTV-TF-340 |  | Testing and Interface modules with CCTV, Telephone, MSN and Access Control for Alignment-RD-03-3 | 6d | 2026-12-24 | 2026-12-30 | CO-TE-CTV-TF-140, CO-TE-CTV-TF-330, CO-TE-CTV-TF-260, CO-TE-CTV-210, CO-TE-CTV-110 |  | 30d |
|  | EX | **External** |  | 2026-04-01 | 2027-01-04 |  |  |  |
|  | 2 | **External Road - 1 - 1** |  | 2026-04-01 | 2027-01-03 |  |  |  |
|  | EW | **Earthworks** |  | 2026-04-01 | 2026-08-26 |  |  |  |
|  | EW | **Earthworks** |  | 2026-04-01 | 2026-08-26 |  |  |  |
| CO-EW-250 |  | Excavation and Backfilling Works Upto Design Level for Earthworks for External Road - 1 - 1(Completed) | 67d | 2026-04-01 A | 2026-06-22 A | MS-CS-PS SS, MOB-30, MOB-20, MOB-80, MOB-40, MOB-50, MOB-60, MOB-10, MOB-70, PRE-CON-MDC-10, PRE-CON-MDC-20, PRE-CON-MDC-30, PRE-CON-MDC-40, PRE-CON-MDC-50, PRE-CON-MDC-60, PRE-CON-MDC-70, PRE-CON-MDC-80, MS-MM-100, MS-MM-130, MS-MM-140, MS-MM-150, CO-EW-270 SS | 100% |  |
| CO-EW-250_R |  | Excavation and Backfilling Works Upto Design Level for Earthworks for External Road - 1 - 1(Remaining) | 8d | 2026-08-18 | 2026-08-26 | MS-CS-PS SS, MOB-30, MOB-20, MOB-80, MOB-40, MOB-50, MOB-60, MOB-10, MOB-70, PRE-CON-MDC-10, PRE-CON-MDC-20, PRE-CON-MDC-30, PRE-CON-MDC-40, PRE-CON-MDC-50, PRE-CON-MDC-60, PRE-CON-MDC-70, PRE-CON-MDC-80, MS-MM-100, MS-MM-130, MS-MM-140, MS-MM-150, CO-EW-250, CO-EW-210_R, CO-SD-ML-160 |  | 32d |
|  | RD | **Road Works** |  | 2026-11-21 | 2027-01-03 |  |  |  |
|  | 3 | **Road 01** |  | 2026-11-21 | 2027-01-03 |  |  |  |
|  | RD | **Pre-Bituminous Construction** |  | 2026-11-21 | 2026-12-09 |  |  |  |
| CO-RD-PB-240 |  | Subgrade Layer for Road Works for External Road - 1 - 1 | 8d | 2026-11-21 | 2026-11-29 | CO-EW-250_R, ENG-MS-RD-A-20, ENG-MS-RD-A-30, ENG-MS-RD-A-40, PRO-R25-RD-DL-100, ENG-MS-RD-A-10, ENG-SH-RD-A-100, ENG-SH-RD-A-110, MS-CS-RD SS, PRO-RD-1DL-100, MS-MM-130, MS-MM-140, CO-RD-PB-280, MS-MM-120 |  | 32d |
| CO-RD-PB-250 |  | Aggregate Base Course Layer for Road Works for External Road - 1 - 1 | 9d | 2026-11-30 | 2026-12-09 | CO-RD-PB-240, PRO-R25-RD-DL-110, PRO-RD-1DL-110 |  | 32d |
|  | 1 | **Bituminous Construction** |  | 2026-12-10 | 2026-12-19 |  |  |  |
| CO-RD-B-260 |  | Bituminous Base Courses Layers for Road Works for External Road - 1 - 1 | 4d | 2026-12-10 | 2026-12-14 | PRO-R25-RD-DL-170, PRO-RD-1DL-130, PRO-R25-RD-DL-160, PRO-R25-RD-DL-160 FF, CO-RD-PB-250 SS, CO-RD-PB-250, CO-RD-PB-250 FF, PRO-RD-1DL-120, PRO-RD-1DL-120 FF |  | 32d |
| CON-RD-MR-250 |  | Preparation of Asphaltic Wearing Course Layer for Roads Network for External Road - 1 - 1 | 4d | 2026-12-15 | 2026-12-19 | PRO-RD-DL-200, PRO-RD-1DL-180, PRO-RD-1DL-190, PRO-RD-1DL-190 FF, PRO-RD-DL-210, PRO-RD-DL-210 FF, CO-RD-B-260 SS, CO-RD-B-260, CO-RD-B-260 FF |  | 41d |
|  | LS | **Pavement Works** |  | 2026-12-15 | 2026-12-30 |  |  |  |
| CO-RD-PV-260 |  | Fixing of Curbstone for Sidewalks Pavement for External Road - 1 - 1 | 8d | 2026-12-15 | 2026-12-23 | ENG-MS-HS-A-10, PRO-R25-RD-DL-130, PRO-RD-1DL-150, CO-RD-B-260 |  | 32d |
| CO-RD-PV-270 |  | Fixing of Interlock Tiles for Sidewalks Pavement for External Road - 1 - 1 | 6d | 2026-12-24 | 2026-12-30 | ENG-MS-HS-A-10, PRO-R25-RD-DL-120, PRO-RD-1DL-140, CO-RD-PV-260 |  | 32d |
|  | TS | **Traffic Signs Boards and Roads Marking** |  | 2026-12-31 | 2027-01-03 |  |  |  |
| CO-RD-F-RM-230 |  | Application of Road Marking Works For Road Works for External Road - 1 - 1 | 2d | 2026-12-31 | 2027-01-02 | CO-RD-PV-270, ENG-MS-MRK-A-10, PRO-R25-RD-DL-150, ENG-SH-MRK-A-110, PRO-RD-1DL-170, CO-RD-PV-260, CON-RD-MR-250 |  | 32d |
| CO-RD-F-TS-170 |  | Installation Works of Traffic Signs Boards For Road Works for External Road - 1 - 1 | 1d | 2027-01-03 | 2027-01-03 | CO-RD-F-RM-230, ENG-MS-TSB-A-10, PRO-R25-RD-DL-140, ENG-SH-TSB-A-100, PRO-RD-1DL-160 |  | 32d |
|  | 4 | **External Road - 1 - 2** |  | 2026-04-18 | 2027-01-04 |  |  |  |
|  | EW | **Earthworks** |  | 2026-04-18 | 2026-09-20 |  |  |  |
|  | EW | **Earthworks** |  | 2026-04-18 | 2026-09-20 |  |  |  |
| CO-EW-280 |  | Excavation and Backfilling Works Upto Design Level for Earthworks for External Road - 1 - 2(Completed) | 53d | 2026-04-18 A | 2026-06-22 A | MS-CS-PS SS, MOB-30, MOB-20, MOB-80, MOB-40, MOB-50, MOB-60, MOB-10, MOB-70, PRE-CON-MDC-10, PRE-CON-MDC-20, PRE-CON-MDC-30, PRE-CON-MDC-40, PRE-CON-MDC-50, PRE-CON-MDC-60, PRE-CON-MDC-70, PRE-CON-MDC-80, MS-MM-100, MS-MM-130, MS-MM-140, MS-MM-150, CO-EW-250 SS | 100% |  |
| CO-EW-280_R |  | Excavation and Backfilling Works Upto Design Level for Earthworks for External Road - 1 - 2(Remaining) | 21d | 2026-08-27 | 2026-09-20 | MS-CS-PS SS, MOB-30, MOB-20, MOB-80, MOB-40, MOB-50, MOB-60, MOB-10, MOB-70, PRE-CON-MDC-10, PRE-CON-MDC-20, PRE-CON-MDC-30, PRE-CON-MDC-40, PRE-CON-MDC-50, PRE-CON-MDC-60, PRE-CON-MDC-70, PRE-CON-MDC-80, MS-MM-100, MS-MM-130, MS-MM-140, MS-MM-150, CO-EW-250_R SS, CO-EW-280, CO-EW-210_R, CO-EW-250_R |  | 34d |
|  | RD | **Road Works** |  | 2026-11-21 | 2027-01-04 |  |  |  |
|  | 3 | **Road 01** |  | 2026-11-21 | 2027-01-04 |  |  |  |
|  | RD | **Pre-Bituminous Construction** |  | 2026-11-21 | 2026-12-03 |  |  |  |
| CO-RD-PB-300 |  | Subgrade Layer for Road Works for External Road - 1 - 2 | 6d | 2026-11-21 | 2026-11-26 | CO-EW-280_R, ENG-MS-RD-A-20, ENG-MS-RD-A-30, ENG-MS-RD-A-40, PRO-R25-RD-DL-100, ENG-MS-RD-A-10, ENG-SH-RD-A-100, ENG-SH-RD-A-110, MS-CS-RD SS, PRO-RD-1DL-100, MS-MM-130, MS-MM-140, CO-RD-PB-240 SS |  | 32d |
| CO-RD-PB-310 |  | Aggregate Base Course Layer for Road Works for External Road - 1 - 2 | 6d | 2026-11-28 | 2026-12-03 | CO-RD-PB-300, PRO-R25-RD-DL-110, PRO-RD-1DL-110 |  | 32d |
|  | 1 | **Bituminous Construction** |  | 2026-12-05 | 2026-12-16 |  |  |  |
| CO-RD-B-320 |  | Bituminous Base Courses Layers for Road Works for External Road - 1 - 2 | 7d | 2026-12-05 | 2026-12-12 | PRO-R25-RD-DL-170, PRO-RD-1DL-130, PRO-R25-RD-DL-160, PRO-R25-RD-DL-160 FF, CO-RD-PB-310 SS, CO-RD-PB-310, CO-RD-PB-310 FF, PRO-RD-1DL-120, PRO-RD-1DL-120 FF |  | 32d |
| CON-RD-MR-310 |  | Preparation of Asphaltic Wearing Course Layer for Roads Network for External Road - 1 - 2 | 4d | 2026-12-13 | 2026-12-16 | PRO-RD-DL-200, PRO-RD-1DL-180, PRO-RD-1DL-190, PRO-RD-1DL-190 FF, PRO-RD-DL-210, PRO-RD-DL-210 FF, CO-RD-B-320 SS, CO-RD-B-320, CO-RD-B-320 FF |  | 40d |
|  | LS | **Pavement Works** |  | 2026-12-14 | 2026-12-27 |  |  |  |
| CO-RD-PV-320 |  | Fixing of Curbstone for Sidewalks Pavement for External Road - 1 - 2 | 6d | 2026-12-14 | 2026-12-20 | ENG-MS-HS-A-10, PRO-R25-RD-DL-130, PRO-RD-1DL-150, CO-RD-B-320 |  | 31d |
| CO-RD-PV-330 |  | Fixing of Interlock Tiles for Sidewalks Pavement for External Road - 1 - 2 | 6d | 2026-12-21 | 2026-12-27 | CO-RD-PV-320, ENG-MS-HS-A-10, PRO-R25-RD-DL-120, PRO-RD-1DL-140 |  | 31d |
|  | TS | **Traffic Signs Boards and Roads Marking** |  | 2026-12-28 | 2027-01-04 |  |  |  |
| CO-RD-F-RM-260 |  | Application of Road Marking Works For Road Works for External Road - 1 - 2 | 4d | 2026-12-28 | 2026-12-31 | CO-RD-PV-330, ENG-MS-MRK-A-10, PRO-R25-RD-DL-150, ENG-SH-MRK-A-110, PRO-RD-1DL-170, CO-RD-PV-320, CON-RD-MR-310 |  | 31d |
| CO-RD-F-TS-200 |  | Installation Works of Traffic Signs Boards For Road Works for External Road - 1 - 2 | 3d | 2027-01-02 | 2027-01-04 | CO-RD-F-RM-260, ENG-MS-TSB-A-10, PRO-R25-RD-DL-140, ENG-SH-TSB-A-100, PRO-RD-1DL-160 |  | 31d |
|  | 1 | **External Road - 2** |  | 2026-05-09 | 2027-01-04 |  |  |  |

| ID | WBS | Task | Duration | Start | Finish | Predecessors | Complete | Total float |
| --- | --- | --- | --- | --- | --- | --- | --- | --- |
|  | EW | **Earthworks** |  | 2026-05-09 | 2026-10-15 |  |  |  |
|  | EW | **Earthworks** |  | 2026-05-09 | 2026-10-15 |  |  |  |
| CO-EW-260 |  | Excavation and Backfilling Works Upto Design Level for Earthworks for External Road - 2(Completed) | 35d | 2026-05-09 A | 2026-06-22 A | MS-CS-PS SS, MOB-30, MOB-20, MOB-80, MOB-40, MOB-50, MOB-60, MOB-10, MOB-70, PRE-CON-MDC-10, PRE-CON-MDC-20, PRE-CON-MDC-30, PRE-CON-MDC-40, PRE-CON-MDC-50, PRE-CON-MDC-60, PRE-CON-MDC-70, PRE-CON-MDC-80, MS-MM-100, MS-MM-130, MS-MM-140, MS-MM-150 | 100% |  |
| CO-EW-260_R |  | Excavation and Backfilling Works Upto Design Level for Earthworks for External Road - 2(Remaining) | 21d | 2026-09-21 | 2026-10-15 | MS-CS-PS SS, MOB-30, MOB-20, MOB-80, MOB-40, MOB-50, MOB-60, MOB-10, MOB-70, PRE-CON-MDC-10, PRE-CON-MDC-20, PRE-CON-MDC-30, PRE-CON-MDC-40, PRE-CON-MDC-50, PRE-CON-MDC-60, PRE-CON-MDC-70, PRE-CON-MDC-80, MS-MM-100, MS-MM-130, MS-MM-140, MS-MM-150, CO-EW-260, CO-EW-280, CO-EW-210_R, CO-EW-280_R, CO-EW-210_R01 |  | 34d |
|  | RD | **Road Works** |  | 2026-11-14 | 2027-01-04 |  |  |  |
|  | 3 | **Road 01** |  | 2026-11-14 | 2027-01-04 |  |  |  |
|  | RD | **Pre-Bituminous Construction** |  | 2026-11-14 | 2026-11-21 |  |  |  |
| CO-RD-PB-260 |  | Subgrade Layer for Road Works for External Road - 2 | 7d | 2026-11-14 | 2026-11-21 | CO-EW-260_R SS, ENG-MS-RD-A-20, ENG-MS-RD-A-30, ENG-MS-RD-A-40, PRO-R25-RD-DL-100, ENG-MS-RD-A-10, ENG-SH-RD-A-100, ENG-SH-RD-A-110, MS-CS-RD SS, PRO-RD-1DL-100, MS-MM-130, MS-MM-140, CO-TE-CTV-TF-360 SS |  | 31d |
| CO-RD-PB-270 |  | Aggregate Base Course Layer for Road Works for External Road - 2 | 4d | 2026-11-17 | 2026-11-21 | CO-RD-PB-260 SS, PRO-R25-RD-DL-110, PRO-RD-1DL-110, CO-RD-PB-260 FF |  | 31d |
|  | 1 | **Bituminous Construction** |  | 2026-11-22 | 2026-12-14 |  |  |  |
| CO-RD-B-280 |  | Bituminous Base Courses Layers for Road Works for External Road - 2 | 10d | 2026-11-22 | 2026-12-02 | PRO-R25-RD-DL-170, PRO-RD-1DL-130, PRO-R25-RD-DL-160, PRO-R25-RD-DL-160 FF, CO-RD-PB-270 SS, CO-RD-PB-270, CO-RD-PB-270 FF, PRO-RD-1DL-120, PRO-RD-1DL-120 FF |  | 31d |
| CON-RD-MR-270 |  | Preparation of Asphaltic Wearing Course Layer for Roads Network for External Road - 2 | 10d | 2026-12-03 | 2026-12-14 | PRO-RD-DL-200, PRO-RD-1DL-180, PRO-RD-1DL-190, PRO-RD-1DL-190 FF, PRO-RD-DL-210, PRO-RD-DL-210 FF, CO-RD-B-280 SS, CO-RD-B-280, CO-RD-B-280 FF |  | 33d |
|  | LS | **Pavement Works** |  | 2026-12-14 | 2026-12-23 |  |  |  |
| CO-RD-PV-280 |  | Fixing of Curbstone for Sidewalks Pavement for External Road - 2 | 9d | 2026-12-14 | 2026-12-23 | ENG-MS-HS-A-10, PRO-R25-RD-DL-130, PRO-RD-1DL-150, CO-RD-B-280, CON-RD-MR-270 SS |  | 31d |
| CO-RD-PV-290 |  | Fixing of Interlock Tiles for Sidewalks Pavement for External Road - 2 | 9d | 2026-12-14 | 2026-12-23 | ENG-MS-HS-A-10, PRO-R25-RD-DL-120 SS, PRO-RD-1DL-140, CO-RD-PV-280 SS |  | 31d |
|  | TS | **Traffic Signs Boards and Roads Marking** |  | 2026-12-24 | 2027-01-04 |  |  |  |
| CO-RD-F-RM-240 |  | Application of Road Marking Works For Road Works for External Road - 2 | 10d | 2026-12-24 | 2027-01-04 | CO-RD-PV-290, ENG-MS-MRK-A-10, PRO-R25-RD-DL-150, ENG-SH-MRK-A-110, PRO-RD-1DL-170, CO-RD-PV-280, CON-RD-MR-270, PRO-RD-1DL-190, PRO-RD-DL-210, CO-RD-B-280 SS, CO-RD-B-280 |  | 31d |
| CO-RD-F-TS-180 |  | Installation Works of Traffic Signs Boards For Road Works for External Road - 2 | 2d | 2026-12-27 | 2026-12-28 | ENG-MS-TSB-A-10, PRO-R25-RD-DL-140, ENG-SH-TSB-A-100, PRO-RD-1DL-160, CON-RD-MR-270, PRO-RD-1DL-190, PRO-RD-DL-210, CO-RD-B-280 SS, CO-RD-B-280 |  | 34d |
|  | 3 | **External Road - 3** |  | 2026-05-09 | 2027-01-04 |  |  |  |
|  | EW | **Earthworks** |  | 2026-05-09 | 2026-11-09 |  |  |  |
|  | EW | **Earthworks** |  | 2026-05-09 | 2026-11-09 |  |  |  |
| CO-EW-270 |  | Excavation and Backfilling Works Upto Design Level for Earthworks for External Road - 3(Completed) | 35d | 2026-05-09 A | 2026-06-22 A | MS-CS-PS SS, MOB-30, MOB-20, MOB-80, MOB-40, MOB-50, MOB-60, MOB-10, MOB-70, PRE-CON-MDC-10, PRE-CON-MDC-20, PRE-CON-MDC-30, PRE-CON-MDC-40, PRE-CON-MDC-50, PRE-CON-MDC-60, PRE-CON-MDC-70, PRE-CON-MDC-80, MS-MM-100, MS-MM-130, MS-MM-140, MS-MM-150, CO-EW-260 SS | 100% |  |
| CO-EW-270_R |  | Excavation and Backfilling Works Upto Design Level for Earthworks for External Road - 3(Remaining) | 21d | 2026-10-17 | 2026-11-09 | MS-CS-PS SS, MOB-30, MOB-20, MOB-80, MOB-40, MOB-50, MOB-60, MOB-10, MOB-70, PRE-CON-MDC-10, PRE-CON-MDC-20, PRE-CON-MDC-30, PRE-CON-MDC-40, PRE-CON-MDC-50, PRE-CON-MDC-60, PRE-CON-MDC-70, PRE-CON-MDC-80, MS-MM-100, MS-MM-130, MS-MM-140, MS-MM-150, CO-EW-260_R SS, CO-EW-270, CO-EW-260_R |  | 34d |
|  | TE | **Telecom and Light Current Network** |  | 2026-10-01 | 2026-11-19 |  |  |  |
|  | PD | **Ducts Works** |  |  |  |  |  |  |
|  | MH | **Manholes Works** |  | 2026-10-01 | 2026-11-12 |  |  |  |
| CO-TE-MH-290 |  | Excavation Works for Manholes of Telecom Network for External Road - 3 | 18d | 2026-10-01 | 2026-10-21 | ENG-SH-TE-A-110, ENG-MS-TE-A-110, ENG-MT-TE-A-110, PRO-TE-1DL-110, MS-CS-TE SS, MS-MM-130, MS-MM-140, PRO-R25-TE-DL-100 SS, ENG-MT-TE-A-100, PRO-TE-1DL-100 |  | 31d |
| CO-TE-MH-300 |  | Installation Works for Manholes of Telecom Network for External Road - 3 | 19d | 2026-10-22 | 2026-11-12 | CO-TE-MH-290, PRO-R25-TE-DL-110 |  | 31d |
| CO-TE-MH-310 |  | Backfilling Works for Manholes of Telecom Network for External Road - 3 | 6d | 2026-11-07 | 2026-11-12 | CO-TE-MH-300 SS, CO-TE-MH-300 FF |  | 31d |
|  | 1 | **Testing and Finishes** |  | 2026-11-14 | 2026-11-19 |  |  |  |
| CO-TE-CTV-TF-360 |  | Testing and Interface modules with Telecom for External Road - 3 | 6d | 2026-11-14 | 2026-11-19 | CO-TE-MH-310, PRO-R25-TE-DL-100 SS, ENG-SH-TE-A-110, ENG-MS-TE-A-110, ENG-MT-TE-A-100, PRO-TE-1DL-100, MS-CS-TE SS, MS-MM-130, MS-MM-140, CO-EW-270_R |  | 31d |
|  | RD | **Road Works** |  | 2026-11-14 | 2027-01-04 |  |  |  |
|  | 3 | **Road 01** |  | 2026-11-14 | 2027-01-04 |  |  |  |
|  | RD | **Pre-Bituminous Construction** |  | 2026-11-14 | 2026-11-29 |  |  |  |
| CO-RD-PB-280 |  | Subgrade Layer for Road Works for External Road - 3 | 6d | 2026-11-14 | 2026-11-19 | CO-EW-270_R, ENG-MS-RD-A-20, ENG-MS-RD-A-30, ENG-MS-RD-A-40, PRO-R25-RD-DL-100, ENG-MS-RD-A-10, ENG-SH-RD-A-100, ENG-SH-RD-A-110, MS-CS-RD SS, PRO-RD-1DL-100, MS-MM-130, MS-MM-140, CO-RD-PB-260 SS, CO-TE-MH-310, CO-TE-CTV-TF-360 SS, PRO-R25-TE-DL-100 SS, ENG-SH-TE-A-110, ENG-MS-TE-A-110, ENG-MT-TE-A-100, PRO-TE-1DL-100, MS-CS-TE SS |  | 32d |
| CO-RD-PB-290 |  | Aggregate Base Course Layer for Road Works for External Road - 3 | 11d | 2026-11-17 | 2026-11-29 | CO-RD-PB-280 SS, PRO-R25-RD-DL-110, PRO-RD-1DL-110, CO-RD-PB-270 SS |  | 34d |
|  | 1 | **Bituminous Construction** |  | 2026-12-03 | 2026-12-29 |  |  |  |
| CO-RD-B-300 |  | Bituminous Base Courses Layers for Road Works for External Road - 3 | 12d | 2026-12-03 | 2026-12-16 | PRO-R25-RD-DL-170, PRO-RD-1DL-130, CO-RD-B-280, PRO-R25-RD-DL-160, PRO-R25-RD-DL-160 FF, CO-RD-PB-290 SS, CO-RD-PB-290, CO-RD-PB-290 FF, PRO-RD-1DL-120, PRO-RD-1DL-120 FF, CO-RD-PB-270 SS, CO-RD-PB-270, CO-RD-PB-270 FF |  | 31d |
| CON-RD-MR-290 |  | Preparation of Asphaltic Wearing Course Layer for Roads Network for External Road - 3 | 11d | 2026-12-17 | 2026-12-29 | PRO-RD-DL-200, PRO-RD-1DL-180, CON-RD-MR-270, PRO-RD-1DL-190, PRO-RD-1DL-190 FF, PRO-RD-DL-210, PRO-RD-DL-210 FF, CO-RD-B-300 SS, CO-RD-B-300, CO-RD-B-300 FF, CO-RD-B-280 SS, CO-RD-B-280, CO-RD-B-280 FF |  | 31d |
|  | LS | **Pavement Works** |  | 2026-12-24 | 2026-12-27 |  |  |  |
| CO-RD-PV-300 |  | Fixing of Curbstone for Sidewalks Pavement for External Road - 3 | 3d | 2026-12-24 | 2026-12-27 | ENG-MS-HS-A-10, PRO-R25-RD-DL-130, PRO-RD-1DL-150, CO-RD-B-300, CO-RD-PV-280 |  | 33d |
| CO-RD-PV-310 |  | Fixing of Interlock Tiles for Sidewalks Pavement for External Road - 3 | 3d | 2026-12-24 | 2026-12-27 | CO-RD-PV-300 SS, ENG-MS-HS-A-10, PRO-R25-RD-DL-120, PRO-RD-1DL-140, CO-RD-PV-300 FF, CO-RD-PV-290 SS |  | 36d |
|  | TS | **Traffic Signs Boards and Roads Marking** |  | 2026-12-30 | 2027-01-04 |  |  |  |
| CO-RD-F-RM-250 |  | Application of Road Marking Works For Road Works for External Road - 3 | 5d | 2026-12-30 | 2027-01-04 | CO-RD-PV-310 SS, ENG-MS-MRK-A-10, PRO-R25-RD-DL-150, ENG-SH-MRK-A-110, PRO-RD-1DL-170, CO-RD-PV-300, CON-RD-MR-290, CO-RD-F-RM-240 SS |  | 31d |
| CO-RD-F-TS-190 |  | Installation Works of Traffic Signs Boards For Road Works for External Road - 3 | 3d | 2026-12-30 | 2027-01-02 | CO-RD-F-RM-250 SS, ENG-MS-TSB-A-10, PRO-R25-RD-DL-140, ENG-SH-TSB-A-100, PRO-RD-1DL-160, CO-RD-F-TS-180 |  | 33d |
|  | GEN | **Superstructure Work** |  | 2026-07-09 | 2027-02-28 |  |  |  |
|  | 4 | **Utility Buildings** |  | 2026-07-09 | 2027-02-28 |  |  |  |
|  | 4 | **Water Pump Station** |  | 2026-07-09 | 2027-02-10 |  |  |  |
|  | 1 | **Civil work** |  | 2026-07-09 | 2026-09-30 |  |  |  |
|  | 1 | **SubStructure** |  | 2026-07-09 | 2026-08-18 |  |  |  |
| CO-UB-PS-100 |  | Excavation Work for Water Pump station building | 8d | 2026-07-09 | 2026-07-18 | ENG-SH-LS-A-170, PRO-LS-CV-1DL-40, PRO-LS-CV-DL-50 |  | 0d |
| CO-UB-PS-110 |  | pouring P.C Conceret for Water Pump station building | 2d | 2026-07-19 | 2026-07-20 | CO-UB-PS-100 |  | 0d |
| CO-UB-PS-120 |  | Formwork for Foundation for Water Pump station building | 7d | 2026-07-21 | 2026-07-28 | CO-UB-PS-110 |  | 0d |
| CO-UB-PS-130 |  | Steel fixing for Foundation for Water Pump station building | 6d | 2026-07-29 | 2026-08-04 | CO-UB-PS-120 |  | 0d |
| CO-UB-PS-140 |  | pouring for Foundation for Water Pump station building | 1d | 2026-08-05 | 2026-08-05 | CO-UB-PS-130 |  | 0d |
| CO-UB-PS-150 |  | curing and deshuttering formwork Pump station building | 7d | 2026-08-06 | 2026-08-13 | CO-UB-PS-140 |  | 0d |
| CO-UB-PS-160 |  | Backfilling and compaction work for pump station | 4d | 2026-08-15 | 2026-08-18 | CO-UB-PS-150 |  | 0d |
|  | 2 | **Super structure** |  | 2026-08-19 | 2026-09-30 |  |  |  |
| CO-UB-PS-170 |  | Formwork for Wall and columns for Water Pump station building | 5d | 2026-08-19 | 2026-08-24 | CO-UB-PS-160 |  | 0d |
| CO-UB-PS-180 |  | Steel fixing for Wall columns | 4d | 2026-08-25 | 2026-08-29 | CO-UB-PS-170 |  | 0d |
| CO-UB-PS-190 |  | pouring for Wall columns | 1d | 2026-08-30 | 2026-08-30 | CO-UB-PS-180 |  | 0d |
| CO-UB-PS-200 |  | curing and deshuttering formwork for Wall columns | 7d | 2026-08-31 | 2026-09-07 | CO-UB-PS-190 |  | 0d |
| CO-UB-PS-210 |  | Waterproofing for Walls columns | 2d | 2026-09-08 | 2026-09-09 | CO-UB-PS-200 |  | 0d |
| CO-UB-PS-220 |  | Formwork for pump roof | 4d | 2026-09-10 | 2026-09-14 | CO-UB-PS-210 |  | 0d |
| CO-UB-PS-230 |  | Steel fixing for pump roof | 4d | 2026-09-15 | 2026-09-19 | CO-UB-PS-220 |  | 0d |
| CO-UB-PS-240 |  | pouring for pump roof | 2d | 2026-09-20 | 2026-09-21 | CO-UB-PS-230 |  | 0d |
| CO-UB-PS-250 |  | curing and deshuttering formwork for pump roof | 7d | 2026-09-22 | 2026-09-30 | CO-UB-PS-240 |  | 0d |
|  | 2 | **Architectural work** |  | 2026-10-01 | 2026-11-04 |  |  |  |
| CO-UB-PS-260 |  | Executing Masonry Works for Water Pump station building | 7d | 2026-10-01 | 2026-10-08 | CO-UB-PS-250 |  | 0d |
| CO-UB-PS-270 |  | Executing Plastering Works for Pump station building | 7d | 2026-10-10 | 2026-10-17 | CO-UB-PS-260 |  | 0d |

| ID | WBS | Task | Duration | Start | Finish | Predecessors | Total float |
| --- | --- | --- | --- | --- | --- | --- | --- |
| CO-UB-PS-280 |  | Executing Painting and Finishes Works for Pump station building | 8d | 2026-10-18 | 2026-10-26 | CO-UB-PS-270 | 0d |
| CO-UB-PS-320 |  | Doors and windows Fixing &Stair Tiles | 8d | 2026-10-27 | 2026-11-04 | CO-UB-PS-280 | 0d |
|  | 3 | **Electrical work** |  |  |  |  |  |
|  | 4 | **Mechanical work** |  | 2026-12-31 | 2027-02-10 |  |  |
| CO-UB-PS-340 |  | Executing HVAC System for Water Pump station building | 10d | 2026-12-31 | 2027-01-11 | CO-UB-PS-270, PRO-LS-LL-MSI-20, CO-UB-PS-320, CO-UB-PS-280, PRO-SPS-LL-MSI-10 | 0d |
| CO-UB-PS-360 |  | Executing Fire fighting institution works(piping and wire installation) for Water Pump station building | 10d | 2027-01-12 | 2027-01-23 | PRO-LS-LL-MSI-20, MS-MO-20, CO-UB-PS-270, CO-UB-PS-270 FF, CO-UB-PS-340, CO-UB-PS-340 FF, PRO-LS-LL-MSI-20 FF, CO-UB-PS-320, CO-UB-PS-320 FF, CO-UB-PS-280, CO-UB-PS-280 FF | 0d |
| CO-UB-PS-380 |  | Executing Plummbing works for Water Pump station building | 10d | 2027-01-24 | 2027-02-03 | CO-UB-PS-360, CO-UB-PS-320, CO-UB-PS-360 FF, PRO-LS-LL-MSI-20, MS-MO-20 | 0d |
| CO-UB-PS-390 |  | Installation of pumps | 6d | 2027-02-04 | 2027-02-10 | CO-UB-PS-380, CO-UB-PS-340, PRO-LS-LL-MSI-20, MS-MO-20, CO-UB-PS-320, CO-UB-PS-280 | 0d |
|  | 3 | **Sewage Lift Station** |  | 2026-10-27 | 2027-02-28 |  |  |
|  | 1 | **Civil work** |  | 2026-10-27 | 2027-02-24 |  |  |
|  | 1 | **Sup Structure** |  | 2026-10-27 | 2026-12-21 |  |  |
| CO-UB-LS-220 |  | Excavation Work for Sewage Lift Station | 9d | 2026-10-27 | 2026-11-05 | PRO-SPS-CV-1DL-10, PRO-SPS-CV-DL-10, ENG-SH-SPS-A-160, CO-UB-PS-280 | 4d |
| CO-UB-LS-230 |  | pouring P.C Conceret for Sewage Lift Station | 2d | 2026-11-07 | 2026-11-08 | CO-UB-LS-220 | 4d |
| CO-UB-LS-240 |  | Formwork for Foundation for Sewage Lift Station | 12d | 2026-11-09 | 2026-11-22 | CO-UB-LS-230 | 4d |
| CO-UB-LS-250 |  | Steel fixing for Foundation for Sewage Lift Station | 10d | 2026-11-23 | 2026-12-03 | CO-UB-LS-240 | 4d |
| CO-UB-LS-260 |  | pouring for Foundationfor Sewage Lift Station | 2d | 2026-12-05 | 2026-12-06 | CO-UB-LS-250 | 4d |
| CO-UB-LS-270 |  | curing and deshuttering formwork for Sewage Lift Station | 7d | 2026-12-07 | 2026-12-14 | CO-UB-LS-260 | 4d |
| CO-UB-LS-280 |  | Backfilling and compaction work for Sewage Lift Station | 6d | 2026-12-15 | 2026-12-21 | CO-UB-LS-270 | 4d |
|  | 2 | **Super structure** |  | 2026-12-22 | 2027-02-24 |  |  |
| CO-UB-LS-290 |  | Formwork for Wall and columns for Sewage Lift Station | 10d | 2026-12-22 | 2027-01-02 | CO-UB-LS-280 | 4d |
| CO-UB-LS-300 |  | Steel fixing for Wall columns | 9d | 2027-01-03 | 2027-01-12 | CO-UB-LS-290 | 4d |
| CO-UB-LS-310 |  | pouring for Wall columns | 1d | 2027-01-13 | 2027-01-13 | CO-UB-LS-300 | 4d |
| CO-UB-LS-320 |  | curing and deshuttering formwork for Wall columns | 7d | 2027-01-14 | 2027-01-21 | CO-UB-LS-310 | 4d |
| CO-UB-LS-330 |  | Waterproofing for Walls columns | 4d | 2027-01-23 | 2027-01-26 | CO-UB-LS-320 | 4d |
| CO-UB-LS-340 |  | Formwork for pump roof | 6d | 2027-01-27 | 2027-02-02 | CO-UB-LS-330 | 4d |
| CO-UB-LS-350 |  | Steel fixing for pump roof | 6d | 2027-02-03 | 2027-02-09 | CO-UB-LS-340 | 4d |
| CO-UB-LS-360 |  | pouring for pump roof | 1d | 2027-02-10 | 2027-02-10 | CO-UB-LS-350 | 4d |
| CO-UB-LS-370 |  | curing and deshuttering formwork for pump roof | 12d | 2027-02-11 | 2027-02-24 | CO-UB-LS-360 | 4d |
|  | 2 | **Architectural work** |  | 2027-02-25 | 2027-02-28 |  |  |
| CO-UB-LS-390 |  | Executing Plastering and Finishes Works for Sewage Lift Station | 3d | 2027-02-25 | 2027-02-28 | CO-UB-LS-370 | 4d |
|  | 3 | **Electrical work** |  |  |  |  |  |
|  | 4 | **Mechanical work** |  |  |  |  |  |
|  | 5 | **Potable Water Tank** |  | 2026-10-18 | 2027-01-14 |  |  |
|  | 1 | **Eearth Work** |  | 2026-10-18 | 2026-11-11 |  |  |
| CO-UB-PWT-100 |  | Excavation work for tank foundation tank formation level for Potable Water Tank | 12d | 2026-10-18 | 2026-10-31 | ENG-SH-ST-A-180, PRO-TSE-CV-1DL-50, PRO-TSE-CV-DL-60, CO-UB-PS-270 | 26d |
| CO-UB-PWT-110 |  | Soil replacement Up to tank formation level for Potable Water Tank | 10d | 2026-11-01 | 2026-11-11 | CO-UB-PWT-100 | 26d |
|  | 2 | **Structural Work** |  | 2026-11-12 | 2026-12-29 |  |  |
| CO-UB-PWT-120 |  | Plain Concrete works for Potable Water Tank | 7d | 2026-11-12 | 2026-11-19 | CO-UB-PWT-110 | 26d |
| CO-UB-PWT-130 |  | Form work for Tank Foundation for Potable Water Tank | 12d | 2026-11-21 | 2026-12-03 | CO-UB-PWT-120, CO-UB-PS-320 | 26d |
| CO-UB-PWT-140 |  | Steel Reinforcement work for Tank Foundation for Potable Water Tank | 12d | 2026-12-05 | 2026-12-17 | CO-UB-PWT-130 | 26d |
| CO-UB-PWT-150 |  | Casting concrete for Tank Foundation for Potable Water Tank | 10d | 2026-12-19 | 2026-12-29 | CO-UB-PWT-140 | 26d |
|  | 3 | **Tank Shell Erection&Roof Installation** |  | 2026-12-30 | 2027-01-14 |  |  |
| CO-UB-PWT-170 |  | shell erection for Potable Water Tank | 14d | 2026-12-30 | 2027-01-14 | CO-UB-PWT-150 | 26d |
|  | 4 | **Mechanical Work&Accessories** |  |  |  |  |  |
|  | 2 | **IrrigationTank** |  | 2026-11-01 | 2027-01-13 |  |  |
|  | 1 | **Eearth Work** |  | 2026-11-01 | 2026-11-25 |  |  |
| CO-UB-IRT-140 |  | Excavation work for tank foundation tank formation level for Irrigation Tank | 12d | 2026-11-01 | 2026-11-14 | CO-UB-PWT-100, ENG-SH-ST-A-180, PRO-TSE-CV-1DL-50, PRO-TSE-CV-DL-60 | 27d |
| CO-UB-IRT-150 |  | Soil replacement Up to tank formation level for Irrigation Tank | 10d | 2026-11-15 | 2026-11-25 | CO-UB-IRT-140 | 27d |
|  | 2 | **Structural Work** |  | 2026-11-26 | 2026-12-28 |  |  |
| CO-UB-IRT-160 |  | Plain Concrete works for Irrigation Tank | 3d | 2026-11-26 | 2026-11-29 | CO-UB-IRT-150 | 27d |
| CO-UB-IRT-170 |  | Form work for Tank Foundation for Irrigation Tank | 10d | 2026-11-30 | 2026-12-10 | CO-UB-IRT-160 | 27d |
| CO-UB-IRT-180 |  | Steel Reinforcement work for Tank Foundation for Irrigation Tank | 11d | 2026-12-12 | 2026-12-23 | CO-UB-IRT-170 | 27d |
| CO-UB-IRT-190 |  | Casting concrete for Tank Foundation for Irrigation Tank | 4d | 2026-12-24 | 2026-12-28 | CO-UB-IRT-180 | 27d |
|  | 3 | **Tank Shell Erection&Roof Installation** |  | 2026-12-29 | 2027-01-13 |  |  |
| CO-UB-IRT-210 |  | shell erection for Irrigation Tank | 14d | 2026-12-29 | 2027-01-13 | CO-UB-IRT-190 | 27d |
|  | 4 | **Mechanical Work&Accessories** |  |  |  |  |  |
|  | 1 | **Control Room** |  | 2026-08-24 | 2027-02-23 |  |  |
|  | 5 | **Civil Work** |  | 2026-08-24 | 2026-10-27 |  |  |
| CO-UB-CR-100 |  | Excavation Work For Control Room Foundation | 7d | 2026-08-24 | 2026-08-31 | ENG-SH-ST-A-190, PRO-TSE-CV-DL-70, PRO-TSE-CV-1DL-60 | 7d |
| CO-UB-CR-110 |  | Pouring for Plain Concrete | 5d | 2026-09-01 | 2026-09-06 | CO-UB-CR-100 | 7d |
| CO-UB-CR-120 |  | Pouring R.C Footing For Control Room | 21d | 2026-09-07 | 2026-10-01 | CO-UB-CR-110 | 7d |
| CO-UB-CR-130 |  | Pouring R.C Columns For Control Room | 12d | 2026-10-03 | 2026-10-15 | CO-UB-CR-120 | 7d |
| CO-UB-CR-140 |  | Pouring Beams and Slab For Control Room | 10d | 2026-10-17 | 2026-10-27 | CO-UB-CR-130 | 7d |
|  | 6 | **Finishing Work** |  | 2026-11-05 | 2027-02-23 |  |  |
|  | 1 | **Architictural work** |  | 2026-11-05 | 2026-12-23 |  |  |
| CO-UB-CR-150 |  | Brick Work For Control Room | 10d | 2026-11-05 | 2026-11-16 | CO-UB-CR-140, CO-UB-PS-320 | 0d |
| CO-UB-CR-160 |  | Thermal & Moisture Protection Work for Control Room | 7d | 2026-11-17 | 2026-11-24 | CO-UB-CR-150 | 0d |
| CO-UB-CR-200 |  | Install For Curtian Wall and Windows and Doors | 7d | 2026-11-25 | 2026-12-02 | CO-UB-CR-160 | 0d |
| CO-UB-CR-240 |  | External Finshing Work (Walls and Floor) | 8d | 2026-12-03 | 2026-12-12 | CO-UB-CR-200 | 0d |
| CO-UB-CR-250 |  | Internal Finshing Work (Walls,Floor and Ceiling) | 10d | 2026-12-13 | 2026-12-23 | CO-UB-CR-240 | 0d |

| ID | WBS | Task | Duration | Start | Finish | Predecessors | Total float |
| --- | --- | --- | --- | --- | --- | --- | --- |
|  | 3 | **Mechanical Work** |  | 2026-11-17 | 2027-02-08 |  |  |
|  | 3 | **HVAC System** |  | 2026-11-17 | 2027-02-08 |  |  |
| CO-UB-CR-170 |  | Install of Refrigerant Piping ( fabricated metal ducts with flanges complete with supports, vanes, dampers ) | 21d | 2026-11-17 | 2026-12-10 | CO-UB-CR-150 | 1d |
| CO-UB-CR-260 |  | Install of Mini split actual and Ducted split | 20d | 2026-12-24 | 2027-01-16 | CO-UB-CR-250, CO-UB-CR-170 | 7d |
| CO-UB-CR-310 |  | Install of Air Grills 150mm x150mm and Air Diffuser 600mm x 600mm | 20d | 2027-01-17 | 2027-02-08 | CO-UB-CR-260, CO-UB-CR-170 | 7d |
|  | 4 | **Fire Fitting System** |  | 2026-12-12 | 2026-12-30 |  |  |
| CO-UB-CR-180 |  | Installation & Testing of 2 hours Fire rated system for closing the openings between rooms with help of Rock wool | 10d | 2026-12-12 | 2026-12-22 | CO-UB-CR-170 | 1d |
| CO-UB-CR-270 |  | Install Fire Extinguishers | 6d | 2026-12-24 | 2026-12-30 | CO-UB-CR-180, CO-UB-CR-250 | 6d |
|  | 1 | **Plumbing System** |  | 2026-12-24 | 2027-01-06 |  |  |
| CO-UB-CR-370 |  | Install of Sanitary Wares Including Relevant Pipes and Fittings | 12d | 2026-12-24 | 2027-01-06 | CO-UB-CR-180, CO-UB-CR-250 | 0d |
|  | 4 | **Electrical Work** |  | 2026-12-24 | 2027-02-16 |  |  |
|  | 1 | **LV Power** |  | 2026-12-24 | 2027-02-11 |  |  |
| CO-UB-CR-190 |  | Install of Distribution board For Control Room | 10d | 2026-12-24 | 2027-01-04 | CO-UB-CR-170, CO-UB-CR-150, CO-UB-CR-250 | 4d |
| CO-UB-CR-220 |  | Install of Earting Cable for Control Room | 14d | 2027-01-05 | 2027-01-20 | CO-UB-CR-190 | 4d |
| CO-UB-CR-280 |  | Install of Socket outlet and LED Lighting | 19d | 2027-01-21 | 2027-02-11 | CO-UB-CR-190, CO-UB-CR-250, CO-UB-CR-220 | 4d |
|  | 3 | **Fire Detection And Alarm System** |  | 2027-01-07 | 2027-02-16 |  |  |
| CO-UB-CR-210 |  | Install of 2C x 1.5 Sqm FR Rated Armored - Cable For Loop Wiring | 4d | 2027-01-07 | 2027-01-11 | CO-UB-CR-170, CO-UB-CR-180, CO-UB-CR-270, CO-UB-CR-370 | 0d |
| CO-UB-CR-230 |  | Install of Transmission Communication cable - Fiber Optics 12Core | 4d | 2027-01-12 | 2027-01-16 | CO-UB-CR-210 | 0d |
| CO-UB-CR-290 |  | Install of power supply system for fire alarm control panel | 4d | 2027-01-17 | 2027-01-20 | CO-UB-CR-230, CO-UB-CR-250 | 0d |
| CO-UB-CR-300 |  | Install of Fire Alarm Control panel | 6d | 2027-01-21 | 2027-01-27 | CO-UB-CR-250 FF, CO-UB-CR-210, CO-UB-CR-230, CO-UB-CR-290 | 0d |
| CO-UB-CR-320 |  | Installation of the addressable manual call point with operation safety glass breaking | 3d | 2027-01-28 | 2027-01-31 | CO-UB-CR-300, CO-UB-CR-250 | 0d |
| CO-UB-CR-330 |  | Install of the photoelectric heat & smoke detector | 5d | 2027-02-01 | 2027-02-06 | CO-UB-CR-320 | 0d |
| CO-UB-CR-340 |  | Install of Sounder With Beacon | 5d | 2027-02-07 | 2027-02-11 | CO-UB-CR-330 | 0d |
| CO-UB-CR-350 |  | Install of Addressable Control module | 4d | 2027-02-13 | 2027-02-16 | CO-UB-CR-340 | 0d |
|  | 2 | **Furnitures work** |  | 2027-02-17 | 2027-02-23 |  |  |
| CO-UB-CR-360 |  | Office Chairs,Tables and Stand | 6d | 2027-02-17 | 2027-02-23 | CO-UB-CR-350, CO-UB-CR-280, CO-UB-CR-270, CO-UB-CR-310, CO-UB-CR-370 | 0d |
|  | ML | **Softscape and Planting Works** |  | 2026-12-26 | 2027-02-03 |  |  |
| CO-LS-PL-160 |  | Planting Works: Planting including plants, forming planting beds, suitable soil, supports, and protection | 15d | 2026-12-26 | 2027-01-11 | PRO-R25-IR-DL-140, ENG-MS-HS-A-10, ENG-SH-HS-A-110, PRO-IR-1DL-140, CO-RD-PV-180 SS | 9d |
| CO-LS-SF-170 |  | Site Furnishings (Seating Bench,Stone Boulders and Gravel) | 20d | 2027-01-12 | 2027-02-03 | CO-LS-PL-160, PRO-R25-IR-DL-150, ENG-MS-HS-A-10, ENG-SH-HS-A-110, PRO-IR-1DL-150 | 9d |
|  | 6 | **Storm Drainage Ponds** |  | 2026-11-05 | 2026-12-31 |  |  |
| CO-SD-PO-100-P1 |  | Excavation & Filling Works - PART 1 for Storm Drainage Ponds | 7d | 2026-11-05 | 2026-11-12 | ENG-SH-DPO-A-120, ENG-MS-DPO-A-130, ENG-MT-DPO-CV-A-110, PRO-DPO-CV-1DL-10, PRO-DPO-CV-DL-10, MS-CS-SL10 SS, CO-SD-CB-210, CO-SW-MH-300, MS-CS-SL10 FF | 0d |
| CO-SD-PO-110-P1 |  | Finished Grouted Riprap - PART 1 for Storm Drainage Ponds | 8d | 2026-11-14 | 2026-11-22 | CO-SD-PO-100-P1 | 0d |
| CO-SD-PO-100-P2 |  | Excavation & Filling Works - PART 2 for Storm Drainage Ponds | 17d | 2026-11-23 | 2026-12-12 | CO-SD-PO-100-P1, CO-SD-PO-110-P1 | 5d |
| CO-SD-PO-110-P2 |  | Finished Grouted Riprap - PART 2 for Storm Drainage Ponds | 17d | 2026-12-13 | 2026-12-31 | CO-SD-PO-100-P2, CO-SD-PO-110-P1 | 5d |
|  | 1 | **Boundary Fence and Gaurd Room** |  | 2026-08-08 | 2027-02-13 |  |  |
|  | 1 | **Gaurd Room Work** |  | 2026-12-13 | 2027-02-01 |  |  |
|  | 1 | **Civil Work** |  | 2026-12-13 | 2026-12-29 |  |  |
| A1000 |  | Excavation Work For Guard Room Foundation | 5d | 2026-12-13 | 2026-12-17 | MS-CF-MOB, ENG-SH-GR-A-190, ENG-MS-GR-A-210, PRO-GR-CV-1DL-60, MS-CS-TSE10 SS, CO-RD-PB-140 SS, MS-CS-TSE10 FF | 3d |
| A1010 |  | Pouring for Plain Concrete for Guard Room | 1d | 2026-12-19 | 2026-12-19 | A1000, PRO-GR-CV-DL-70 | 3d |
| A1020 |  | Pouring R.C Footing for Guard Room | 3d | 2026-12-20 | 2026-12-22 | A1010 | 3d |
| A1030 |  | Pouring R.C Columns for Guard Room | 3d | 2026-12-23 | 2026-12-26 | A1020 | 3d |
| A1040 |  | Pouring Beams and Slab for Guard Room | 3d | 2026-12-27 | 2026-12-29 | A1030 | 3d |
|  | 2 | **Finishing Work** |  | 2026-12-30 | 2027-02-01 |  |  |
|  | 1 | **Architectural work** |  | 2026-12-30 | 2027-01-30 |  |  |
| A1050 |  | Brick Works for Architectural Works for Guard Rooms | 6d | 2026-12-30 | 2027-01-05 | A1040 | 3d |
| A1060 |  | Thermal & Moisture Protection Work for Architectural Works for Guard Rooms | 5d | 2027-01-06 | 2027-01-11 | A1050 | 3d |
| A1080 |  | External Finshing Work (Walls and Floor) for Architectural Works for Guard Rooms | 2d | 2027-01-18 | 2027-01-19 | A1110, A1140, A1220, A1250, A1340, A1200, A1060, A1050 | 7d |
| A1090 |  | Internal Finshing Work (Walls,Floor and Ceiling) for Architectural Works for Guard Rooms | 6d | 2027-01-18 | 2027-01-24 | A1110, A1140, A1220, A1250, A1340, A1200, A1060, A1050 | 3d |
| A1070 |  | Installation of Windows and Doors for Architectural Works for Guard Rooms | 5d | 2027-01-25 | 2027-01-30 | A1080, A1090 | 3d |
|  | 3 | **Mechanical Work** |  | 2027-01-12 | 2027-01-20 |  |  |
|  | 1 | **Drainage System** |  | 2027-01-12 | 2027-01-20 |  |  |
| A1110 |  | Installation of Sewage Piping System complete with joints, angles, reducer etc. for Drainage System for Guard Rooms | 4d | 2027-01-12 | 2027-01-16 | A1050, A1060 | 4d |
| A1120 |  | Installation of all Sanitary Ware for Drainage System for Guard Rooms | 4d | 2027-01-17 | 2027-01-20 | A1110 | 11d |
|  | 2 | **Water Supply System** |  | 2027-01-12 | 2027-01-20 |  |  |
| A1140 |  | Installation of Water Piping System complete with joints, angles, reducer etc. for Water Supply System for Guard Rooms | 3d | 2027-01-12 | 2027-01-14 | A1050, A1060 | 5d |
| A1180 |  | Installation oF Water Supply Wares (Water Heater, Faucets, Etc..) for Water Supply System for Guard Rooms | 2d | 2027-01-16 | 2027-01-17 | A1140 | 14d |
| A1240 |  | Installation of water tanks for Water Supply System for Guard Rooms | 1d | 2027-01-20 | 2027-01-20 | A1180, A1080 | 13d |
|  | 3 | **HVAC System** |  | 2027-01-12 | 2027-01-14 |  |  |
| A1200 |  | Installation of AC Piping for HVAC System for Guard Rooms | 2d | 2027-01-12 | 2027-01-13 | A1050, A1060 | 6d |
| A1190 |  | Installation of AC Units for HVAC System for Guard Rooms | 1d | 2027-01-14 | 2027-01-14 | A1200 | 16d |
|  | 4 | **Fire Fighting System** |  | 2027-01-12 | 2027-01-14 |  |  |
| A1220 |  | Installation & Testing of 2 hours Fire Fighting system for Fire Fighting System for Guard Rooms | 2d | 2027-01-12 | 2027-01-13 | A1060, A1050 | 6d |
| A1230 |  | Installation of Fire Extinguishers for Fire Fighting System for Guard Rooms | 1d | 2027-01-14 | 2027-01-14 | A1220 | 16d |
|  | 4 | **Electrical Work** |  | 2027-01-12 | 2027-01-24 |  |  |
|  | 1 | **LV Power** |  | 2027-01-12 | 2027-01-21 |  |  |
| A1250 |  | Installation of Conduits and Cables for LV System for Gaurd Rooms | 5d | 2027-01-12 | 2027-01-17 | A1050, A1060 | 3d |
| A1260 |  | Install of Eletrical Finishes (DBs, Sockets and Lightings) and Termination for LV System for Gaurd Rooms | 4d | 2027-01-18 | 2027-01-21 | A1250 | 10d |
|  | 3 | **Fire Detection And Alarm System** |  | 2027-01-12 | 2027-01-24 |  |  |
| A1340 |  | Installation of Conduits and Cables for Fire Alarm System for Gaurd Rooms | 5d | 2027-01-12 | 2027-01-17 | A1060, A1050 | 3d |
| A1350 |  | Installation of Fire Alarm Devices (AMCP, SD,HD, Sounder and Panels) for Fire Alarm System for Gaurd Rooms | 6d | 2027-01-18 | 2027-01-24 | A1340 | 8d |

| ID | WBS | Task | Duration | Start | Finish | Predecessors | Total float |
| --- | --- | --- | --- | --- | --- | --- | --- |
|  | 2 | **Security System** |  |  |  |  |  |
|  | 2 | **Furniture work** |  | 2027-01-31 | 2027-02-01 |  |  |
| A1100 |  | Office Chairs,Tables and Stand | 2d | 2027-01-31 | 2027-02-01 | A1230, A1180, A1070, A1120, A1190, A1260, A1350, A1060, A1050 | 3d |
|  | 3 | **Boundary Fence** |  | 2026-08-08 | 2027-02-13 |  |  |
|  | 2 | **Boundary Fence - South** |  | 2026-08-08 | 2027-01-26 |  |  |
|  | 1 | **Civil Work** |  | 2026-08-08 | 2026-10-28 |  |  |
| CO-SU-FE-N-CI-100 |  | Excavation Work For Boundary Fence South | 16d | 2026-08-08 | 2026-08-25 | ENG-SH-GR-A-200, ENG-MS-GR-A-220, PRO-FE-CV-1DL-70, MS-CS-LV10 SS, CO-EW-240, CO-EW-200, CO-EW-230, CO-EW-220, MS-CS-LV10 FF | 1d |
| CO-SU-FE-N-CI-110 |  | Pouring for Plain Concrete For Boundary Fence South | 14d | 2026-08-26 | 2026-09-10 | CO-SU-FE-N-CI-100, PRO-FE-CV-DL-80 FF | 1d |
| CO-SU-FE-N-CI-120 |  | Pouring R.C Footing For Boundary Fence South | 12d | 2026-09-12 | 2026-09-26 | CO-SU-FE-N-CI-110 | 1d |
| CO-SU-FE-N-CI-130 |  | Pouring R.C Columns For Boundary Fence South | 16d | 2026-09-27 | 2026-10-14 | CO-SU-FE-N-CI-120 | 1d |
| CO-SU-FE-N-CI-140 |  | Pouring Beams For Boundary Fence South | 12d | 2026-10-15 | 2026-10-28 | CO-SU-FE-N-CI-130 | 1d |
|  | 5 | **Finishing Work** |  | 2026-10-29 | 2027-01-26 |  |  |
|  | 4 | **Architictural work** |  | 2026-10-29 | 2027-01-02 |  |  |
| CO-SU-FE-N-AR-100 |  | Install Brick Work For Boundary Fence South | 19d | 2026-10-29 | 2026-11-19 | CO-SU-FE-N-CI-140 | 1d |
| CO-SU-FE-N-AR-110 |  | Insulation For Boundary Fence South | 15d | 2026-12-06 | 2026-12-22 | CO-SU-FE-N-AR-100, CO-SU-FE-N-EL-240 | 1d |
| CO-SU-FE-N-AR-120 |  | Install all the Relevant Cladding and Finishes For Boundary Fence South | 9d | 2026-12-23 | 2027-01-02 | CO-SU-FE-N-AR-110 | 5d |
|  | 3 | **Electrical Work** |  | 2026-11-21 | 2027-01-26 |  |  |
| CO-SU-FE-N-EL-240 |  | Installation of Conduits and Cables for Electricial Works For Boundary Fence South | 13d | 2026-11-21 | 2026-12-05 | CO-SU-FE-N-AR-100 | 1d |
| CO-SU-FE-N-EL-250 |  | Install, fixings, testing of all electrical finishes and lightings for Electricial Works For Boundary Fence South | 21d | 2027-01-03 | 2027-01-26 | CO-SU-FE-N-EL-240, CO-SU-FE-N-AR-120 | 5d |
|  | 1 | **Boundary Fence - West** |  | 2026-08-26 | 2027-02-06 |  |  |
|  | 1 | **Civil Work** |  | 2026-08-26 | 2026-11-19 |  |  |
| CO-SU-FE-N-CI-150 |  | Excavation Work For Boundary Fence West | 16d | 2026-08-26 | 2026-09-13 | ENG-SH-GR-A-200, ENG-MS-GR-A-220, PRO-FE-CV-1DL-70, MS-CS-LV10 SS, CO-EW-240, CO-EW-200, CO-EW-230, CO-EW-220, CO-EW-210_R, CO-SU-FE-N-CI-100 | 1d |
| CO-SU-FE-N-CI-160 |  | Pouring for Plain Concrete For Boundary Fence West | 13d | 2026-09-14 | 2026-09-29 | CO-SU-FE-N-CI-150, PRO-FE-CV-DL-80 FF, CO-SU-FE-N-CI-110 | 1d |
| CO-SU-FE-N-CI-170 |  | Pouring R.C Footing For Boundary Fence West | 16d | 2026-09-30 | 2026-10-18 | CO-SU-FE-N-CI-160, CO-SU-FE-N-CI-120 | 1d |
| CO-SU-FE-N-CI-180 |  | Pouring R.C Columns For Boundary Fence West | 16d | 2026-10-19 | 2026-11-05 | CO-SU-FE-N-CI-170, CO-SU-FE-N-CI-130 | 1d |
| CO-SU-FE-N-CI-190 |  | Pouring Beams For Boundary Fence West | 12d | 2026-11-07 | 2026-11-19 | CO-SU-FE-N-CI-180, CO-SU-FE-N-CI-140 | 1d |
|  | 5 | **Finishing Work** |  | 2026-11-21 | 2027-02-06 |  |  |
|  | 4 | **Architictural work** |  | 2026-11-21 | 2027-01-19 |  |  |
| CO-SU-FE-N-AR-130 |  | Install Brick Work For Boundary Fence West | 16d | 2026-11-21 | 2026-12-08 | CO-SU-FE-N-CI-190, CO-SU-FE-N-AR-100 | 1d |
| CO-SU-FE-N-AR-140 |  | Insulation For Boundary Fence West | 12d | 2026-12-23 | 2027-01-05 | CO-SU-FE-N-AR-130, CO-SU-FE-N-EL-260, CO-SU-FE-N-AR-110 | 1d |
| CO-SU-FE-N-AR-150 |  | Install all the Relevant Cladding and Finishes For Boundary Fence West | 12d | 2027-01-06 | 2027-01-19 | CO-SU-FE-N-AR-140, CO-SU-FE-N-AR-120 | 2d |
|  | 3 | **Electrical Work** |  | 2026-12-09 | 2027-02-06 |  |  |
| CO-SU-FE-N-EL-260 |  | Installation of Conduits and Cables for Electricial Works For Boundary Fence West | 8d | 2026-12-09 | 2026-12-17 | CO-SU-FE-N-AR-130, CO-SU-FE-N-EL-240 | 5d |
| CO-SU-FE-N-EL-270 |  | Install, fixings, testing of all electrical finishes and lightings for Electricial Works For Boundary Fence West | 9d | 2027-01-27 | 2027-02-06 | CO-SU-FE-N-EL-260, CO-SU-FE-N-AR-150, CO-SU-FE-N-EL-250 | 5d |
|  | 3 | **Boundary Fence - North** |  | 2026-09-14 | 2027-02-02 |  |  |
|  | 1 | **Civil Work** |  | 2026-09-14 | 2026-12-08 |  |  |
| CO-SU-FE-N-CI-200 |  | Excavation Work For Boundary Fence North | 16d | 2026-09-14 | 2026-10-03 | ENG-SH-GR-A-200, ENG-MS-GR-A-220, PRO-FE-CV-1DL-70, MS-CS-LV10 SS, CO-EW-240, CO-EW-200, CO-EW-230, CO-EW-220, CO-EW-210_R, CO-SU-FE-N-CI-150 | 1d |
| CO-SU-FE-N-CI-210 |  | Pouring for Plain Concrete For Boundary Fence North | 13d | 2026-10-04 | 2026-10-18 | CO-SU-FE-N-CI-200, PRO-FE-CV-DL-80 FF, CO-SU-FE-N-CI-160 | 1d |
| CO-SU-FE-N-CI-220 |  | Pouring R.C Footing For Boundary Fence North | 16d | 2026-10-19 | 2026-11-05 | CO-SU-FE-N-CI-210, CO-SU-FE-N-CI-170 | 1d |
| CO-SU-FE-N-CI-230 |  | Pouring R.C Columns For Boundary Fence North | 16d | 2026-11-07 | 2026-11-24 | CO-SU-FE-N-CI-220, CO-SU-FE-N-CI-180 | 1d |
| CO-SU-FE-N-CI-240 |  | Pouring Beams For Boundary Fence North | 12d | 2026-11-25 | 2026-12-08 | CO-SU-FE-N-CI-230, CO-SU-FE-N-CI-190 | 1d |
|  | 5 | **Finishing Work** |  | 2026-12-09 | 2027-02-02 |  |  |
|  | 4 | **Architictural work** |  | 2026-12-09 | 2027-01-26 |  |  |
| CO-SU-FE-N-AR-160 |  | Install Brick Work For Boundary Fence North | 14d | 2026-12-09 | 2026-12-24 | CO-SU-FE-N-CI-240, CO-SU-FE-N-AR-130 | 1d |
| CO-SU-FE-N-AR-170 |  | Insulation For Boundary Fence North | 11d | 2027-01-06 | 2027-01-18 | CO-SU-FE-N-AR-160, CO-SU-FE-N-EL-280, CO-SU-FE-N-AR-140 | 1d |
| CO-SU-FE-N-AR-180 |  | Install all the Relevant Cladding and Finishes For Boundary Fence North | 6d | 2027-01-20 | 2027-01-26 | CO-SU-FE-N-AR-170, CO-SU-FE-N-AR-150 | 2d |
|  | 3 | **Electrical Work** |  | 2026-12-26 | 2027-02-02 |  |  |
| CO-SU-FE-N-EL-280 |  | Installation of Conduits and Cables for Electricial Works For Boundary Fence North | 7d | 2026-12-26 | 2027-01-02 | CO-SU-FE-N-AR-160, CO-SU-FE-N-EL-260 | 4d |
| CO-SU-FE-N-EL-290 |  | Install, fixings, testing of all electrical finishes and lightings for Electricial Works For Boundary Fence North | 6d | 2027-01-27 | 2027-02-02 | CO-SU-FE-N-EL-280, CO-SU-FE-N-AR-180, CO-SU-FE-N-EL-270 SS | 5d |
|  | 4 | **Boundary Fence - East** |  | 2026-10-04 | 2027-02-13 |  |  |
|  | 1 | **Civil Work** |  | 2026-10-04 | 2026-12-24 |  |  |
| CO-SU-FE-N-CI-250 |  | Excavation Work For Boundary Fence East | 16d | 2026-10-04 | 2026-10-21 | ENG-SH-GR-A-200, ENG-MS-GR-A-220, PRO-FE-CV-1DL-70, MS-CS-LV10 SS, CO-EW-240, CO-EW-200, CO-EW-230, CO-EW-220, CO-EW-250_R, CO-EW-210_R, CO-SU-FE-N-CI-200 | 1d |
| CO-SU-FE-N-CI-260 |  | Pouring for Plain Concrete For Boundary Fence East | 13d | 2026-10-22 | 2026-11-05 | CO-SU-FE-N-CI-250, PRO-FE-CV-DL-80 FF, CO-SU-FE-N-CI-210 | 1d |
| CO-SU-FE-N-CI-270 |  | Pouring R.C Footing For Boundary Fence East | 16d | 2026-11-07 | 2026-11-24 | CO-SU-FE-N-CI-260, CO-SU-FE-N-CI-220 | 1d |
| CO-SU-FE-N-CI-280 |  | Pouring R.C Columns For Boundary Fence East | 16d | 2026-11-25 | 2026-12-13 | CO-SU-FE-N-CI-270, CO-SU-FE-N-CI-230 | 1d |
| CO-SU-FE-N-CI-290 |  | Pouring Beams For Boundary Fence East | 10d | 2026-12-14 | 2026-12-24 | CO-SU-FE-N-CI-280, CO-SU-FE-N-CI-240 | 1d |
|  | 5 | **Finishing Work** |  | 2026-12-26 | 2027-02-13 |  |  |
|  | 4 | **Architictural work** |  | 2026-12-26 | 2027-02-07 |  |  |
| CO-SU-FE-N-AR-190 |  | Install Brick Work For Boundary Fence East | 11d | 2026-12-26 | 2027-01-06 | CO-SU-FE-N-CI-290, CO-SU-FE-N-AR-160, MS-CF-MV | 1d |
| CO-SU-FE-N-AR-200 |  | Insulation For Boundary Fence East | 8d | 2027-01-19 | 2027-01-27 | CO-SU-FE-N-AR-190, CO-SU-FE-N-EL-300, CO-SU-FE-N-AR-170 | 1d |
| CO-SU-FE-N-AR-210 |  | Install all the Relevant Cladding and Finishes For Boundary Fence East | 9d | 2027-01-28 | 2027-02-07 | CO-SU-FE-N-AR-200, CO-SU-FE-N-AR-180 | 1d |
|  | 3 | **Electrical Work** |  | 2027-01-07 | 2027-02-13 |  |  |
| CO-SU-FE-N-EL-300 |  | Installation of Conduits and Cables for Electricial Works For Boundary Fence East | 10d | 2027-01-07 | 2027-01-18 | CO-SU-FE-N-AR-190, CO-SU-FE-N-EL-280 | 1d |
| CO-SU-FE-N-EL-310 |  | Install, fixings, testing of all electrical finishes and lightings for Electricial Works For Boundary Fence East | 5d | 2027-02-08 | 2027-02-13 | CO-SU-FE-N-EL-300, CO-SU-FE-N-AR-210, CO-SU-FE-N-EL-290 | 1d |
|  | TC | **Testing and Comissioning** |  | 2027-02-02 | 2027-03-03 |  |  |
|  | INF | **Infrastructure Networks** |  | 2027-02-07 | 2027-02-24 |  |  |
|  | LV | **Low Voltage Network** |  | 2027-02-11 | 2027-02-24 |  |  |
| TC-LV-100 |  | Testing and Commissioning of Low Voltage Network | 12d | 2027-02-11 | 2027-02-24 | CON-RD-MR-150, CON-LV-ML-120, CON-LV-TT-100, CON-LV-TT-110, CON-LV-ES-100, CO-RD-PB-150, CON-LV-HC-120, CON-LV-DP-120, CON-LV-ML-150, CON-LV-TT-120, CON-LV-HC-150, CON-LV-ML-180, CON-LV-TT-140, CON-LV-TT-150, CON-LV-ES-120, CON-LV-HC-180, CON-LV-DP-180, CON-LV-ML-210, CON-LV-TT-160, CON-LV-HC-210, CON-RD-MR-230, CON-LV-ML-240, CON-LV-TT-180, CON-LV-TT-190, CON-LV-ES-140, CO-RD-PB-230, CON-LV-HC-240, CON-LV-DP-240, CON-RD-MR-250, CO-RD-PB-250, CON-RD-MR-270, CO-RD-PB-270, CON-RD-MR-290, CO-RD-PB-290, CON-RD-MR-310, CO-RD-PB-310, PRO-LV-DP-1DL-100, PRO-LV-DP-DL-100, CON-LV-DP-130, PRO-R25-RD-DL-170, PRO-RD-1DL-130, PRO-R25-RD-DL-100, PRO-RD-1DL-100, MS-MM-140, MS-MM-130, MS-CS-RD SS, ENG-SH-RD-A-100, ENG-SH-RD-A-110, ENG-MS-RD-A-30, ENG-MS-RD-A-20, ENG-MS-RD-A-10, ENG-MS-RD-A-40, CO-TE-MH-190, CO-TE-DW-160, CO-SL-CL-300, CO-SL-LP-380, CO-MV-ML-300, CO-IR-ML-180, CO-PW-FH-190, CO-PW-VC-250, CO-PW-ML-160, CO-TSE-ML-230, CO-SW-ML-160, CO-SW-MH-250, CO-SD-CB-200, CO-SD-ML-160, CO-SD-MH-260, CO-EW-210_R, CO-SL-LP-520, PRO-LV-TT-1DL-100, PRO-LV-TT-DL-100, CO-MV-TF-230, PRO-LV-DP-1DL-110, PRO-LV-DP-DL-120, PRO-R25-RD-DL-110, PRO-R25-RD-DL-110 FF, PRO-RD-1DL-110, PRO-RD-1DL-110 FF, CO-EW-220, CO-EW-220 FF, CO-SD-ML-190, CO-SD-ML-190 FF, CO-SD-MH-300, CO-SD-MH-300 FF, CO-SD-CB-230, CO-SD-CB-230 FF, CO-SW-ML-190, CO-SW-ML-190 FF, CO-SW-MH-300, CO-SW-MH-300 FF, CO-PW-ML-190, CO-PW-ML-190 FF, CO-PW-VC-280, CO-PW-VC-280 FF, CO-IR-ML-230, CO-IR-ML-230 FF, CO-TSE-ML-280, CO-TSE-ML-280 FF, CO-MV-ML-330, CO-MV-ML-330 FF, CO-SL-LP-430, CO-SL-LP-430 FF, CO-SL-CL-330, CO-SL-CL-330 FF, ENG-MS-RD-A-20 FF, ENG-MS-RD-A-30 FF, ENG-MS-RD-A-40 FF, PRO-R25-RD-DL-100 FF, CON-LV-HC-180 FF, CON-LV-ML-180 FF, ENG-MS-RD-A-10 FF, ENG-SH-RD-A-100 FF, ENG-SH-RD-A-110 FF, PRO-RD-1DL-100 FF, MS-MM-130 FF, MS-MM-140 FF, CO-TE-DW-200, CO-TE-DW-200 FF, CO-PW-FH-220, CO-PW-FH-220 FF, CO-TE-MH-220, CO-TE-MH-220 FF, CON-LV-DP-180 FF, CON-LV-DP-190, CON-LV-DP-110, CO-RD-PB-150 SS, CO-IR-TF-210, CO-IR-TF-210 FF, CO-TE-CTV-210, CO-TE-CTV-210 FF, CO-EW-230, CO-EW-230 FF, CO-SD-ML-220, CO-SD-ML-220 FF, CO-PW-ML-220, CO-PW-ML-220 FF, CO-PW-VC-310, CO-PW-VC-310 FF, CO-TSE-ML-330, CO-TSE-ML-330 FF, CO-MV-ML-360, CO-MV-ML-360 FF, CO-SL-LP-480, CO-SL-LP-480 FF, CO-SL-CL-360, CO-SL-CL-360 FF, CON-LV-HC-210 FF, CON-LV-ML-210 FF, CO-TE-DW-240, CO-TE-DW-240 FF, CO-PW-FH-250, CO-PW-FH-250 FF, CO-TE-MH-250, CO-TE-MH-250 FF, CO-RD-PB-140, CO-RD-PB-140 FF, CO-IR-ML-380, CO-IR-ML-380 FF, CO-SD-MH-220, CO-SD-MH-220 FF, PRO-SD-1DL-100, PRO-SD-1DL-100 FF, CO-SD-MH-200, CO-SD-MH-200 FF, PRO-R25-SD-DL-100, PRO-R25-SD-DL-100 FF, CO-SD-MH-190, CO-SD-MH-190 FF, ENG-MT-SD-ML-A-100, ENG-MT-SD-ML-A-100 FF, MS-CS-SD SS, ENG-MS-SD-ML-A-110, ENG-MS-SD-ML-A-110 FF, ENG-MT-SD-ML-A-110, ENG-MT-SD-ML-A-110 FF, ENG-SH-SD-ML-A-110, ENG-SH-SD-ML-A-110 FF, CO-SD-MH-180, CO-SD-MH-180 FF, CO-SD-ML-130, CO-SD-ML-130 FF, PRO-R25-SD-DL-110, PRO-R25-SD-DL-110 FF, PRO-R25-SD-DL-130, PRO-R25-SD-DL-130 FF, PRO-SD-1DL-130, PRO-SD-1DL-130 FF, PRO-SD-1DL-120, PRO-SD-1DL-120 FF, ENG-MT-SD-CB-A-110, ENG-MT-SD-CB-A-110 FF, ENG-SH-SD-CB-A-110, ENG-SH-SD-CB-A-110 FF, ENG-MS-SD-CB-A-110, ENG-MS-SD-CB-A-110 FF, PRO-SW-1DL-110 SS, ENG-MT-SW-ML-A-100, ENG-MT-SW-ML-A-100 FF, ENG-SH-SW-ML-A-110, ENG-SH-SW-ML-A-110 FF, MS-CS-SW SS, ENG-MS-SW-ML-A-110, ENG-MS-SW-ML-A-110 FF, PRO-SW-1DL-100, PRO-SW-1DL-100 FF, ENG-MT-SW-ML-A-110, ENG-MT-SW-ML-A-110 FF, PRO-LV-DP-1DL-100 FF, PRO-LV-DP-DL-100 FF, CON-LV-DP-120 FF, CON-LV-DP-190 FF, CON-LV-DP-110 FF, ENG-SH-MSN-A-120, ENG-SH-MSN-A-120 FF, ENG-SH-CTV-A-110, ENG-SH-CTV-A-110 FF, ENG-MS-CTV-A-110, ENG-MS-CTV-A-110 FF, ENG-MT-CTV-A-100, ENG-MT-CTV-A-100 FF, PRO-CTV-1DL-100, PRO-CTV-1DL-100 FF, MS-CS-TE SS, CO-MV-TF-250, CO-TE-MH-160, CO-TE-MH-160 FF, CO-TE-CTV-110, CO-TE-CTV-110 FF, T/C-IR FF, MS-CF-LO | 0d |
|  | PW1 | **Irrigation Network** |  | 2027-02-11 | 2027-02-24 |  |  |
| T/C-IR |  | Testing and Commissioning of Irrigation Network | 12d | 2027-02-11 | 2027-02-24 | CO-TSE-TF-170, CO-IR-TF-170, CO-TSE-TF-180, CO-IR-TF-180, CO-TSE-TF-190, CO-TSE-TF-200, CO-TSE-TF-210, CO-IR-TF-210, MS-CF-IR, PRO-R25-RD-DL-170, PRO-RD-1DL-130, PRO-R25-RD-DL-100, PRO-RD-1DL-100, MS-MM-140, MS-MM-130, MS-CS-RD SS, ENG-SH-RD-A-100, ENG-SH-RD-A-110, ENG-MS-RD-A-30, ENG-MS-RD-A-20, ENG-MS-RD-A-10, ENG-MS-RD-A-40, CO-TE-MH-190, CO-TE-DW-160, CO-SL-CL-300, CO-SL-LP-380, CON-LV-HC-150, CON-LV-ML-150, CO-MV-ML-300, CO-IR-ML-180, CO-PW-FH-190, CO-PW-VC-250, CO-PW-ML-160, CO-TSE-ML-230, CO-SW-ML-160, CO-SW-MH-250, CO-SD-CB-200, CO-SD-ML-160, CO-SD-MH-260, CO-EW-210_R, CO-SL-LP-520, PRO-R25-RD-DL-110, PRO-RD-1DL-110, CO-EW-220, CO-SD-ML-190, CO-SD-MH-300, CO-SD-CB-230, CO-SW-ML-190, CO-SW-MH-300, CO-PW-ML-190, CO-PW-VC-280, CO-IR-ML-230, CO-TSE-ML-280, CO-MV-ML-330, CO-SL-LP-430, CO-SL-CL-330, CON-LV-HC-180, CON-LV-ML-180, CO-TE-DW-200, CO-PW-FH-220, CO-TE-MH-220, CON-LV-DP-180, CO-PW-TF-110, CO-PW-TF-130, ENG-MT-IR-ML-A-110, PRO-IR-1DL-110, PRO-R25-IR-DL-110, PRO-IR-1DL-100, CO-PW-ML-110, PRO-R25-IR-DL-100, ENG-SH-IR-ML-A-110, ENG-MS-IR-ML-A-110, ENG-MT-IR-ML-A-100, CO-PW-ML-100, MS-CS-IR SS, CO-EW-200, CO-IR-ML-190, CO-IR-ML-170, CO-IR-ML-160, CO-EW-240, CO-IR-ML-150, CO-SW-MH-240, CO-SW-MH-230, PRO-SW-1DL-110, PRO-R25-SW-DL-110, CO-SW-MH-220, ENG-MT-SW-ML-A-100, ENG-SH-SW-ML-A-110, MS-CS-SW SS, ENG-MS-SW-ML-A-110, CO-SD-MH-380, CO-SD-ML-250, CO-SW-MH-210, PRO-R25-SD-DL-110, PRO-R25-SD-DL-130, PRO-SD-1DL-130, PRO-SD-1DL-120, CO-SD-CB-190, ENG-MT-SD-CB-A-110, ENG-SH-SD-CB-A-110, ENG-MS-SD-CB-A-110, MS-CS-SD SS, CO-SD-CB-180, PRO-SW-1DL-100, PRO-R25-SW-DL-100, CO-SW-ML-150, ENG-MT-SW-ML-A-110, CO-SW-ML-140, CO-RD-PB-150 SS, CO-TE-CTV-210, CO-EW-230, CO-SD-ML-220, CO-PW-ML-220, CO-PW-VC-310, CO-TSE-ML-330, CO-MV-ML-360, CO-SL-LP-480, CO-SL-CL-360, CON-LV-HC-210, CON-LV-ML-210, CO-TE-DW-240, CO-PW-FH-250, CO-TE-MH-250, CO-RD-PB-140, CO-IR-ML-380, CO-SD-MH-220, PRO-SD-1DL-100, CO-SD-MH-200, PRO-R25-SD-DL-100, CO-SD-MH-190, ENG-MT-SD-ML-A-100, ENG-MS-SD-ML-A-110, ENG-MT-SD-ML-A-110, ENG-SH-SD-ML-A-110, CO-SD-MH-180, CO-SD-ML-130, PRO-SW-1DL-110 SS, PRO-LV-DP-1DL-100, PRO-LV-DP-DL-100, CON-LV-DP-120, CON-LV-DP-190, CON-LV-DP-110, ENG-SH-MSN-A-120, ENG-SH-CTV-A-110, ENG-MS-CTV-A-110, ENG-MT-CTV-A-100, PRO-CTV-1DL-100, MS-CS-TE SS, CO-TE-MH-160, CO-TE-CTV-110, T/C-TSE-10 FF, MS-CF-IR SS | 0d |

| ID | WBS | Task | Duration | Start | Finish | Predecessors | Total float |
| --- | --- | --- | --- | --- | --- | --- | --- |
|  | PW11 | **TSE Network** |  | 2027-02-11 | 2027-02-24 |  |  |
| T/C-TSE-10 |  | Testing and Commissioning of TSE Network | 12d | 2027-02-11 | 2027-02-24 | CO-TSE-TF-170, CON-RD-MR-150, CO-TSE-TF-180, CO-TSE-TF-190, CO-TSE-TF-200, CON-RD-MR-230, CON-RD-MR-250, CON-RD-MR-270, CON-RD-MR-290, CON-RD-MR-310, CO-TSE-TF-210, PRO-R25-RD-DL-170, PRO-RD-1DL-130, PRO-R25-RD-DL-100, PRO-RD-1DL-100, MS-MM-140, MS-MM-130, MS-CS-RD SS, ENG-SH-RD-A-100, ENG-SH-RD-A-110, ENG-MS-RD-A-30, ENG-MS-RD-A-20, ENG-MS-RD-A-10, ENG-MS-RD-A-40, CO-TE-MH-190, CO-TE-DW-160, CO-SL-CL-300, CO-SL-LP-380, CON-LV-HC-150, CON-LV-ML-150, CO-MV-ML-300, CO-IR-ML-180, CO-PW-FH-190, CO-PW-VC-250, CO-PW-ML-160, CO-TSE-ML-230, CO-SW-ML-160, CO-SW-MH-250, CO-SD-CB-200, CO-SD-ML-160, CO-SD-MH-260, CO-EW-210_R, CO-SL-LP-520, PRO-R25-RD-DL-110, PRO-RD-1DL-110, CO-EW-220, CO-SD-ML-190, CO-SD-MH-300, CO-SD-CB-230, CO-SW-ML-190, CO-SW-MH-300, CO-PW-ML-190, CO-PW-VC-280, CO-IR-ML-230, CO-TSE-ML-280, CO-MV-ML-330, CO-SL-LP-430, CO-SL-CL-330, CON-LV-HC-180, CON-LV-ML-180, CO-TE-DW-200, CO-PW-FH-220, CO-TE-MH-220, CON-LV-DP-180, CO-RD-PB-150 SS, CO-IR-TF-210, CO-TE-CTV-210, CO-EW-230, CO-SD-ML-220, CO-PW-ML-220, CO-PW-VC-310, CO-TSE-ML-330, CO-MV-ML-360, CO-SL-LP-480, CO-SL-CL-360, CON-LV-HC-210, CON-LV-ML-210, CO-TE-DW-240, CO-PW-FH-250, CO-TE-MH-250, CO-RD-PB-140, CO-IR-ML-380, CO-SD-MH-220, PRO-SD-1DL-100, CO-SD-MH-200, PRO-R25-SD-DL-100, CO-SD-MH-190, ENG-MT-SD-ML-A-100, MS-CS-SD SS, ENG-MS-SD-ML-A-110, ENG-MT-SD-ML-A-110, ENG-SH-SD-ML-A-110, CO-SD-MH-180, CO-SD-ML-130, PRO-R25-SD-DL-110, PRO-R25-SD-DL-130, PRO-SD-1DL-130, PRO-SD-1DL-120, ENG-MT-SD-CB-A-110, ENG-SH-SD-CB-A-110, ENG-MS-SD-CB-A-110, PRO-SW-1DL-110 SS, ENG-MT-SW-ML-A-100, ENG-SH-SW-ML-A-110, MS-CS-SW SS, ENG-MS-SW-ML-A-110, PRO-SW-1DL-100, ENG-MT-SW-ML-A-110, PRO-LV-DP-1DL-100, PRO-LV-DP-DL-100, CON-LV-DP-120, CON-LV-DP-190, CON-LV-DP-110, ENG-SH-MSN-A-120, ENG-SH-CTV-A-110, ENG-MS-CTV-A-110, ENG-MT-CTV-A-100, PRO-CTV-1DL-100, MS-CS-TE SS, CO-TE-MH-160, CO-TE-CTV-110, T/C-PW FF | 0d |
|  | PW | **Potable Water Network** |  | 2027-02-11 | 2027-02-24 |  |  |
| T/C-PW |  | Testing and Commissioning of Potable Water Network | 12d | 2027-02-11 | 2027-02-24 | CO-PW-TF-110, CO-PW-TF-100, CO-PW-TF-120, CON-RD-MR-150, CO-PW-TF-130, CO-PW-TF-150, CO-PW-TF-140, CO-PW-TF-160, CO-PW-TF-180, CO-PW-TF-170, CO-PW-TF-190, CO-PW-TF-210, CO-PW-TF-200, CON-RD-MR-230, CON-RD-MR-250, CON-RD-MR-270, CON-RD-MR-290, CON-RD-MR-310, CO-PW-TF-220, MS-CF-PW, PRO-R25-RD-DL-170, PRO-RD-1DL-130, PRO-R25-RD-DL-100, PRO-RD-1DL-100, MS-MM-140, MS-MM-130, MS-CS-RD SS, ENG-SH-RD-A-100, ENG-SH-RD-A-110, ENG-MS-RD-A-30, ENG-MS-RD-A-20, ENG-MS-RD-A-10, ENG-MS-RD-A-40, CO-TE-MH-190, CO-TE-DW-160, CO-SL-CL-300, CO-SL-LP-380, CON-LV-HC-150, CON-LV-ML-150, CO-MV-ML-300, CO-IR-ML-180, CO-PW-FH-190, CO-PW-VC-250, CO-PW-ML-160, CO-TSE-ML-230, CO-SW-ML-160, CO-SW-MH-250, CO-SD-CB-200, CO-SD-ML-160, CO-SD-MH-260, CO-EW-210_R, CO-SL-LP-520, PRO-R25-RD-DL-110, PRO-RD-1DL-110, CO-EW-220, CO-SD-ML-190, CO-SD-MH-300, CO-SD-CB-230, CO-SW-ML-190, CO-SW-MH-300, CO-PW-ML-190, CO-PW-VC-280, CO-IR-ML-230, CO-TSE-ML-280, CO-MV-ML-330, CO-SL-LP-430, CO-SL-CL-330, CON-LV-HC-180, CON-LV-ML-180, CO-TE-DW-200, CO-PW-FH-220, CO-TE-MH-220, CON-LV-DP-180, CO-RD-PB-150 SS, CO-IR-TF-210, CO-TE-CTV-210, CO-EW-230, CO-SD-ML-220, CO-PW-ML-220, CO-PW-VC-310, CO-TSE-ML-330, CO-MV-ML-360, CO-SL-LP-480, CO-SL-CL-360, CON-LV-HC-210, CON-LV-ML-210, CO-TE-DW-240, CO-PW-FH-250, CO-TE-MH-250, CO-RD-PB-140, CO-IR-ML-380, CO-SD-MH-220, PRO-SD-1DL-100, CO-SD-MH-200, PRO-R25-SD-DL-100, CO-SD-MH-190, ENG-MT-SD-ML-A-100, MS-CS-SD SS, ENG-MS-SD-ML-A-110, ENG-MT-SD-ML-A-110, ENG-SH-SD-ML-A-110, CO-SD-MH-180, CO-SD-ML-130, PRO-R25-SD-DL-110, PRO-R25-SD-DL-130, PRO-SD-1DL-130, PRO-SD-1DL-120, ENG-MT-SD-CB-A-110, ENG-SH-SD-CB-A-110, ENG-MS-SD-CB-A-110, PRO-SW-1DL-110 SS, ENG-MT-SW-ML-A-100, ENG-SH-SW-ML-A-110, MS-CS-SW SS, ENG-MS-SW-ML-A-110, PRO-SW-1DL-100, ENG-MT-SW-ML-A-110, PRO-LV-DP-1DL-100, PRO-LV-DP-DL-100, CON-LV-DP-120, CON-LV-DP-190, CON-LV-DP-110, ENG-SH-MSN-A-120, ENG-SH-CTV-A-110, ENG-MS-CTV-A-110, ENG-MT-CTV-A-100, PRO-CTV-1DL-100, MS-CS-TE SS, CO-TE-MH-160, CO-TE-CTV-110, T/C-SW FF | 0d |
|  | SW | **Sewage Network** |  | 2027-02-11 | 2027-02-24 |  |  |
| T/C-SW |  | Testing and Commissioning of Sewage Network | 12d | 2027-02-11 | 2027-02-24 | CON-RD-MR-150, CO-SW-TF-230, CO-SW-TF-250, CO-SW-TF-270, CO-SW-TF-290, CON-RD-MR-230, CON-RD-MR-250, CON-RD-MR-270, CON-RD-MR-290, CON-RD-MR-310, MS-MO-50, MS-MO-20, PRO-R25-RD-DL-170, PRO-RD-1DL-130, PRO-R25-RD-DL-100, PRO-RD-1DL-100, MS-MM-140, MS-MM-130, MS-CS-RD SS, ENG-SH-RD-A-100, ENG-SH-RD-A-110, ENG-MS-RD-A-30, ENG-MS-RD-A-20, ENG-MS-RD-A-10, ENG-MS-RD-A-40, CO-TE-MH-190, CO-TE-DW-160, CO-SL-CL-300, CO-SL-LP-380, CON-LV-HC-150, CON-LV-ML-150, CO-MV-ML-300, CO-IR-ML-180, CO-PW-FH-190, CO-PW-VC-250, CO-PW-ML-160, CO-TSE-ML-230, CO-SW-ML-160, CO-SW-MH-250, CO-SD-CB-200, CO-SD-ML-160, CO-SD-MH-260, CO-EW-210_R, CO-SL-LP-520, PRO-R25-RD-DL-110, PRO-RD-1DL-110, CO-EW-220, CO-SD-ML-190, CO-SD-MH-300, CO-SD-CB-230, CO-SW-ML-190, CO-SW-MH-300, CO-PW-ML-190, CO-PW-VC-280, CO-IR-ML-230, CO-TSE-ML-280, CO-MV-ML-330, CO-SL-LP-430, CO-SL-CL-330, CON-LV-HC-180, CON-LV-ML-180, CO-TE-DW-200, CO-PW-FH-220, CO-TE-MH-220, CON-LV-DP-180, PRO-SW-1DL-110, PRO-R25-SW-DL-110, ENG-MT-SW-ML-A-100, ENG-SH-SW-ML-A-110, MS-CS-SW SS, CO-EW-200, ENG-MS-SW-ML-A-110, CO-SD-MH-220, CO-SD-ML-130, PRO-R25-SD-DL-110, PRO-R25-SD-DL-130, PRO-SD-1DL-130, PRO-SD-1DL-120, ENG-MT-SD-CB-A-110, ENG-SH-SD-CB-A-110, ENG-MS-SD-CB-A-110, MS-CS-SD SS, PRO-SW-1DL-100, PRO-R25-SW-DL-100, ENG-MT-SW-ML-A-110, PRO-SD-1DL-140, PRO-R25-SD-DL-140, CO-SW-MH-240, CO-SW-MH-230, CO-SW-MH-220, CO-EW-240, CO-SD-MH-380, CO-SD-ML-250, CO-SW-MH-210, CO-SD-CB-190, CO-SD-CB-180, CO-SW-ML-150, CO-SW-ML-140, CO-RD-PB-150 SS, CO-IR-TF-210, CO-TE-CTV-210, CO-EW-230, CO-SD-ML-220, CO-PW-ML-220, CO-PW-VC-310, CO-TSE-ML-330, CO-MV-ML-360, CO-SL-LP-480, CO-SL-CL-360, CON-LV-HC-210, CON-LV-ML-210, CO-TE-DW-240, CO-PW-FH-250, CO-TE-MH-250, CO-RD-PB-140, CO-IR-ML-380, PRO-SD-1DL-100, CO-SD-MH-200, PRO-R25-SD-DL-100, CO-SD-MH-190, ENG-MT-SD-ML-A-100, ENG-MS-SD-ML-A-110, ENG-MT-SD-ML-A-110, ENG-SH-SD-ML-A-110, CO-SD-MH-180, PRO-SW-1DL-110 SS, PRO-LV-DP-1DL-100, PRO-LV-DP-DL-100, CON-LV-DP-120, CON-LV-DP-190, CON-LV-DP-110, ENG-SH-MSN-A-120, ENG-SH-CTV-A-110, ENG-MS-CTV-A-110, ENG-MT-CTV-A-100, PRO-CTV-1DL-100, MS-CS-TE SS, CO-TE-MH-160, CO-TE-CTV-110, T/C-DPO FF | 0d |
|  | SD | **Storm Drainage Network** |  | 2027-02-11 | 2027-02-24 |  |  |
| T/C-DPO |  | Testing and Commissioning of Storm Drainage Ponds | 12d | 2027-02-11 | 2027-02-24 | CO-SD-PO-110-P1, CO-SD-PO-110-P2, MS-MO-20, MS-MO-50, PRO-R25-RD-DL-170, PRO-RD-1DL-130, PRO-R25-RD-DL-100, PRO-RD-1DL-100, MS-MM-140, MS-MM-130, MS-CS-RD SS, ENG-SH-RD-A-100, ENG-SH-RD-A-110, ENG-MS-RD-A-30, ENG-MS-RD-A-20, ENG-MS-RD-A-10, ENG-MS-RD-A-40, CO-TE-MH-190, CO-TE-DW-160, CO-SL-CL-300, CO-SL-LP-380, CON-LV-HC-150, CON-LV-ML-150, CO-MV-ML-300, CO-IR-ML-180, CO-PW-FH-190, CO-PW-VC-250, CO-PW-ML-160, CO-TSE-ML-230, CO-SW-ML-160, CO-SW-MH-250, CO-SD-CB-200, CO-SD-ML-160, CO-SD-MH-260, CO-EW-210_R, CO-SL-LP-520, PRO-R25-RD-DL-110, PRO-RD-1DL-110, CO-EW-220, CO-SD-ML-190, CO-SD-MH-300, CO-SD-CB-230, CO-SW-ML-190, CO-SW-MH-300, CO-PW-ML-190, CO-PW-VC-280, CO-IR-ML-230, CO-TSE-ML-280, CO-MV-ML-330, CO-SL-LP-430, CO-SL-CL-330, CON-LV-HC-180, CON-LV-ML-180, CO-TE-DW-200, CO-PW-FH-220, CO-TE-MH-220, CON-LV-DP-180, CO-RD-PB-150 SS, CO-IR-TF-210, CO-TE-CTV-210, CO-EW-230, CO-SD-ML-220, CO-PW-ML-220, CO-PW-VC-310, CO-TSE-ML-330, CO-MV-ML-360, CO-SL-LP-480, CO-SL-CL-360, CON-LV-HC-210, CON-LV-ML-210, CO-TE-DW-240, CO-PW-FH-250, CO-TE-MH-250, CO-RD-PB-140, CO-IR-ML-380, CO-SD-MH-220, PRO-SD-1DL-100, CO-SD-MH-200, PRO-R25-SD-DL-100, CO-SD-MH-190, ENG-MT-SD-ML-A-100, MS-CS-SD SS, ENG-MS-SD-ML-A-110, ENG-MT-SD-ML-A-110, ENG-SH-SD-ML-A-110, CO-SD-MH-180, CO-SD-ML-130, PRO-R25-SD-DL-110, PRO-R25-SD-DL-130, PRO-SD-1DL-130, PRO-SD-1DL-120, ENG-MT-SD-CB-A-110, ENG-SH-SD-CB-A-110, ENG-MS-SD-CB-A-110, PRO-SW-1DL-110 SS, ENG-MT-SW-ML-A-100, ENG-SH-SW-ML-A-110, MS-CS-SW SS, ENG-MS-SW-ML-A-110, PRO-SW-1DL-100, ENG-MT-SW-ML-A-110, PRO-LV-DP-1DL-100, PRO-LV-DP-DL-100, CON-LV-DP-120, CON-LV-DP-190, CON-LV-DP-110, ENG-SH-MSN-A-120, ENG-SH-CTV-A-110, ENG-MS-CTV-A-110, ENG-MT-CTV-A-100, PRO-CTV-1DL-100, MS-CS-TE SS, CO-TE-MH-160, CO-TE-CTV-110, T/C-SL FF, MS-CF-SD | 0d |
| T/C-SD |  | Testing and Commissioning of Storm Drainage Ponds and Storm Drainage Network | 12d | 2027-02-11 | 2027-02-24 | CO-SD-ML-TF-100, CO-SD-MH-TF-210, CO-SD-PO-110-P2, CON-RD-MR-150, CO-SD-ML-TF-110, CO-SD-CB-TF-170, CO-SD-MH-TF-230, CO-SD-CB-TF-180, CO-SD-ML-TF-120, CO-SD-CB-TF-200, CO-SD-MH-TF-250, CO-SD-CB-TF-210, CO-SD-ML-TF-130, CO-SD-CB-TF-260, CO-SD-MH-TF-290, CON-RD-MR-230, CON-RD-MR-250, CON-RD-MR-270, CON-RD-MR-290, CON-RD-MR-310, T/C-DPO FF, MS-MO-50, MS-MO-20, PRO-R25-RD-DL-170, PRO-RD-1DL-130, PRO-R25-RD-DL-100, PRO-RD-1DL-100, MS-MM-140, MS-MM-130, MS-CS-RD SS, ENG-SH-RD-A-100, ENG-SH-RD-A-110, ENG-MS-RD-A-30, ENG-MS-RD-A-20, ENG-MS-RD-A-10, ENG-MS-RD-A-40, CO-TE-MH-190, CO-TE-DW-160, CO-SL-CL-300, CO-SL-LP-380, CON-LV-HC-150, CON-LV-ML-150, CO-MV-ML-300, CO-IR-ML-180, CO-PW-FH-190, CO-PW-VC-250, CO-PW-ML-160, CO-TSE-ML-230, CO-SW-ML-160, CO-SW-MH-250, CO-SD-CB-200, CO-SD-ML-160, CO-SD-MH-260, CO-EW-210_R, CO-SL-LP-520, PRO-R25-RD-DL-110, PRO-RD-1DL-110, CO-EW-220, CO-SD-ML-190, CO-SD-MH-300, CO-SD-CB-230, CO-SW-ML-190, CO-SW-MH-300, CO-PW-ML-190, CO-PW-VC-280, CO-IR-ML-230, CO-TSE-ML-280, CO-MV-ML-330, CO-SL-LP-430, CO-SL-CL-330, CON-LV-HC-180, CON-LV-ML-180, CO-TE-DW-200, CO-PW-FH-220, CO-TE-MH-220, CON-LV-DP-180, CO-SD-ML-130, PRO-R25-SD-DL-110, PRO-R25-SD-DL-130, PRO-SD-1DL-130, PRO-SD-1DL-120, ENG-MT-SD-CB-A-110, ENG-SH-SD-CB-A-110, ENG-MS-SD-CB-A-110, MS-CS-SD SS, CO-SD-MH-220, PRO-SD-1DL-140, PRO-R25-SD-DL-140, PRO-SD-1DL-150, PRO-R25-SD-DL-150, CO-SD-ML-250, CO-SD-PO-110-P1, CO-SD-CB-190, CO-SD-CB-180, CO-SD-CB-TF-190, CO-SD-MH-380, CO-RD-PB-150 SS, CO-IR-TF-210, CO-TE-CTV-210, CO-EW-230, CO-SD-ML-220, CO-PW-ML-220, CO-PW-VC-310, CO-TSE-ML-330, CO-MV-ML-360, CO-SL-LP-480, CO-SL-CL-360, CON-LV-HC-210, CON-LV-ML-210, CO-TE-DW-240, CO-PW-FH-250, CO-TE-MH-250, CO-RD-PB-140, CO-IR-ML-380, PRO-SD-1DL-100, CO-SD-MH-200, PRO-R25-SD-DL-100, CO-SD-MH-190, ENG-MT-SD-ML-A-100, ENG-MS-SD-ML-A-110, ENG-MT-SD-ML-A-110, ENG-SH-SD-ML-A-110, CO-SD-MH-180, PRO-SW-1DL-110 SS, ENG-MT-SW-ML-A-100, ENG-SH-SW-ML-A-110, MS-CS-SW SS, ENG-MS-SW-ML-A-110, PRO-SW-1DL-100, ENG-MT-SW-ML-A-110, PRO-LV-DP-1DL-100, PRO-LV-DP-DL-100, CON-LV-DP-120, CON-LV-DP-190, CON-LV-DP-110, ENG-SH-MSN-A-120, ENG-SH-CTV-A-110, ENG-MS-CTV-A-110, ENG-MT-CTV-A-100, PRO-CTV-1DL-100, MS-CS-TE SS, CO-TE-MH-160, CO-TE-CTV-110, T/C-SL FF, MS-CF-SD | 0d |
|  | SL | **Street Lighting Network** |  | 2027-02-07 | 2027-02-20 |  |  |
| T/C-SL |  | Testing and Commissioning of Street Lighting Network | 12d | 2027-02-07 | 2027-02-20 | CO-SL-TF-410, CO-SL-LP-370, CO-SL-TF-440, CO-SL-TF-450, CO-SL-TF-460, CO-SL-LP-420, CO-SL-TF-490, CO-SL-LP-470, CO-SL-TF-530, CO-SL-LP-530, CO-SL-TF-570, CO-SL-LP-580, PRO-R25-RD-DL-170, PRO-RD-1DL-130, PRO-R25-RD-DL-100, PRO-RD-1DL-100, MS-MM-140, MS-MM-130, MS-CS-RD SS, ENG-SH-RD-A-100, ENG-SH-RD-A-110, ENG-MS-RD-A-30, ENG-MS-RD-A-20, ENG-MS-RD-A-10, ENG-MS-RD-A-40, CO-TE-MH-190, CO-TE-DW-160, CO-SL-CL-300, CO-SL-LP-380, CON-LV-HC-150, CON-LV-ML-150, CO-MV-ML-300, CO-IR-ML-180, CO-PW-FH-190, CO-PW-VC-250, CO-PW-ML-160, CO-TSE-ML-230, CO-SW-ML-160, CO-SW-MH-250, CO-SD-CB-200, CO-SD-ML-160, CO-SD-MH-260, CO-EW-210_R, CO-SL-LP-520, CO-SL-ES-250, PRO-R25-SL-DL-160 SS, ENG-MT-SL-DB-A-100, MS-CS-SL SS, PRO-R25-SL-DL-170, PRO-R25-RD-DL-110, PRO-RD-1DL-110, CO-EW-220, CO-SD-ML-190, CO-SD-MH-300, CO-SD-CB-230, CO-SW-ML-190, CO-SW-MH-300, CO-PW-ML-190, CO-PW-VC-280, CO-IR-ML-230, CO-TSE-ML-280, CO-MV-ML-330, CO-SL-LP-430, CO-SL-CL-330, CON-LV-HC-180, CON-LV-ML-180, CO-TE-DW-200, CO-PW-FH-220, CO-TE-MH-220, CON-LV-DP-180, CO-SL-DB-340, CO-SL-ES-330, PRO-R25-SL-DL-160, CO-SL-LP-570, CO-SL-CL-420, CO-EW-200, CO-SL-ES-310, CO-SL-CL-390, CO-EW-240, CO-RD-PB-150 SS, CO-IR-TF-210, CO-TE-CTV-210, CO-EW-230, CO-SD-ML-220, CO-PW-ML-220, CO-PW-VC-310, CO-TSE-ML-330, CO-MV-ML-360, CO-SL-LP-480, CO-SL-CL-360, CON-LV-HC-210, CON-LV-ML-210, CO-TE-DW-240, CO-PW-FH-250, CO-TE-MH-250, CO-RD-PB-140, CO-IR-ML-380, CO-SD-MH-220, PRO-SD-1DL-100, CO-SD-MH-200, PRO-R25-SD-DL-100, CO-SD-MH-190, ENG-MT-SD-ML-A-100, MS-CS-SD SS, ENG-MS-SD-ML-A-110, ENG-MT-SD-ML-A-110, ENG-SH-SD-ML-A-110, CO-SD-MH-180, CO-SD-ML-130, PRO-R25-SD-DL-110, PRO-R25-SD-DL-130, PRO-SD-1DL-130, PRO-SD-1DL-120, ENG-MT-SD-CB-A-110, ENG-SH-SD-CB-A-110, ENG-MS-SD-CB-A-110, PRO-SW-1DL-110 SS, ENG-MT-SW-ML-A-100, ENG-SH-SW-ML-A-110, MS-CS-SW SS, ENG-MS-SW-ML-A-110, PRO-SW-1DL-100, ENG-MT-SW-ML-A-110, PRO-LV-DP-1DL-100, PRO-LV-DP-DL-100, CON-LV-DP-120, CON-LV-DP-190, CON-LV-DP-110, ENG-SH-MSN-A-120, ENG-SH-CTV-A-110, ENG-MS-CTV-A-110, ENG-MT-CTV-A-100, PRO-CTV-1DL-100, MS-CS-TE SS, CO-SL-ES-290, CO-TE-MH-160, CO-TE-CTV-110, T/C-TE FF, MS-CF-SL, MS-CF-SL SS | 4d |
|  | TE | **Telecom and Light Current Network** |  | 2027-02-07 | 2027-02-20 |  |  |
| T/C-TE |  | Testing and Commissioning of Telecom and Light Current Networks | 12d | 2027-02-07 | 2027-02-20 | CO-TE-CTV-TF-140, CON-RD-MR-150, CO-TE-CTV-TF-180, CO-TE-CTV-TF-220, CO-TE-CTV-TF-260, CON-RD-MR-230, CON-RD-MR-250, CON-RD-MR-270, CON-RD-MR-290, CON-RD-MR-310, CO-TE-CTV-TF-310, CO-TE-CTV-TF-320, CO-TE-CTV-TF-330, CO-TE-CTV-TF-340, CO-TE-CTV-TF-350, CO-TE-CTV-TF-360, PRO-R25-RD-DL-170, PRO-RD-1DL-130, PRO-R25-RD-DL-100, PRO-RD-1DL-100, MS-MM-140, MS-MM-130, MS-CS-RD SS, ENG-SH-RD-A-100, ENG-SH-RD-A-110, ENG-MS-RD-A-30, ENG-MS-RD-A-20, ENG-MS-RD-A-10, ENG-MS-RD-A-40, CO-TE-MH-190, CO-TE-DW-160, CO-SL-CL-300, CO-SL-LP-380, CON-LV-HC-150, CON-LV-ML-150, CO-MV-ML-300, CO-IR-ML-180, CO-PW-FH-190, CO-PW-VC-250, CO-PW-ML-160, CO-TSE-ML-230, CO-SW-ML-160, CO-SW-MH-250, CO-SD-CB-200, CO-SD-ML-160, CO-SD-MH-260, CO-EW-210_R, CO-SL-LP-520, PRO-R25-RD-DL-110, PRO-RD-1DL-110, CO-EW-220, CO-SD-ML-190, CO-SD-MH-300, CO-SD-CB-230, CO-SW-ML-190, CO-SW-MH-300, CO-PW-ML-190, CO-PW-VC-280, CO-IR-ML-230, CO-TSE-ML-280, CO-MV-ML-330, CO-SL-LP-430, CO-SL-CL-330, CON-LV-HC-180, CON-LV-ML-180, CO-TE-DW-200, CO-PW-FH-220, CO-TE-MH-220, CON-LV-DP-180, CO-TE-CTV-240, CO-TE-CTV-150 SS, CO-RD-PB-150 SS, CO-IR-TF-210, CO-TE-CTV-210, CO-EW-230, CO-SD-ML-220, CO-PW-ML-220, CO-PW-VC-310, CO-TSE-ML-330, CO-MV-ML-360, CO-SL-LP-480, CO-SL-CL-360, CON-LV-HC-210, CON-LV-ML-210, CO-TE-DW-240, CO-PW-FH-250, CO-TE-MH-250, CO-RD-PB-140, CO-IR-ML-380, CO-SD-MH-220, PRO-SD-1DL-100, CO-SD-MH-200, PRO-R25-SD-DL-100, CO-SD-MH-190, ENG-MT-SD-ML-A-100, MS-CS-SD SS, ENG-MS-SD-ML-A-110, ENG-MT-SD-ML-A-110, ENG-SH-SD-ML-A-110, CO-SD-MH-180, CO-SD-ML-130, PRO-R25-SD-DL-110, PRO-R25-SD-DL-130, PRO-SD-1DL-130, PRO-SD-1DL-120, ENG-MT-SD-CB-A-110, ENG-SH-SD-CB-A-110, ENG-MS-SD-CB-A-110, PRO-SW-1DL-110 SS, ENG-MT-SW-ML-A-100, ENG-SH-SW-ML-A-110, MS-CS-SW SS, ENG-MS-SW-ML-A-110, PRO-SW-1DL-100, ENG-MT-SW-ML-A-110, PRO-LV-DP-1DL-100, PRO-LV-DP-DL-100, CON-LV-DP-120, CON-LV-DP-190, CON-LV-DP-110, ENG-SH-MSN-A-120, ENG-SH-CTV-A-110, ENG-MS-CTV-A-110, ENG-MT-CTV-A-100, PRO-CTV-1DL-100, MS-CS-TE SS, CO-TE-MH-160, CO-TE-CTV-110, T/C-MV FF, MS-CF-TE | 4d |
|  | MV | **Medium Voltage Network** |  | 2027-02-07 | 2027-02-20 |  |  |
| T/C-MV |  | Testing and Commissioning of Medium Voltage Network | 12d | 2027-02-07 | 2027-02-20 | CO-MV-TF-230, CO-MV-TF-240, CO-MV-TF-250, CO-MV-TF-260, PRO-R25-RD-DL-170, PRO-RD-1DL-130, PRO-R25-RD-DL-100, PRO-RD-1DL-100, MS-MM-140, MS-MM-130, MS-CS-RD SS, ENG-SH-RD-A-100, ENG-SH-RD-A-110, ENG-MS-RD-A-30, ENG-MS-RD-A-20, ENG-MS-RD-A-10, ENG-MS-RD-A-40, CO-TE-MH-190, CO-TE-DW-160, CO-SL-CL-300, CO-SL-LP-380, CON-LV-HC-150, CON-LV-ML-150, CO-MV-ML-300, CO-IR-ML-180, CO-PW-FH-190, CO-PW-VC-250, CO-PW-ML-160, CO-TSE-ML-230, CO-SW-ML-160, CO-SW-MH-250, CO-SD-CB-200, CO-SD-ML-160, CO-SD-MH-260, CO-EW-210_R, CO-SL-LP-520, PRO-R25-RD-DL-110, PRO-RD-1DL-110, CO-EW-220, CO-SD-ML-190, CO-SD-MH-300, CO-SD-CB-230, CO-SW-ML-190, CO-SW-MH-300, CO-PW-ML-190, CO-PW-VC-280, CO-IR-ML-230, CO-TSE-ML-280, CO-MV-ML-330, CO-SL-LP-430, CO-SL-CL-330, CON-LV-HC-180, CON-LV-ML-180, CO-TE-DW-200, CO-PW-FH-220, CO-TE-MH-220, CON-LV-DP-180, CO-RD-PB-150 SS, CO-IR-TF-210, CO-TE-CTV-210, CO-EW-230, CO-SD-ML-220, CO-PW-ML-220, CO-PW-VC-310, CO-TSE-ML-330, CO-MV-ML-360, CO-SL-LP-480, CO-SL-CL-360, CON-LV-HC-210, CON-LV-ML-210, CO-TE-DW-240, CO-PW-FH-250, CO-TE-MH-250, CO-RD-PB-140, CO-IR-ML-380, CO-SD-MH-220, PRO-SD-1DL-100, CO-SD-MH-200, PRO-R25-SD-DL-100, CO-SD-MH-190, ENG-MT-SD-ML-A-100, MS-CS-SD SS, ENG-MS-SD-ML-A-110, ENG-MT-SD-ML-A-110, ENG-SH-SD-ML-A-110, CO-SD-MH-180, CO-SD-ML-130, PRO-R25-SD-DL-110, PRO-R25-SD-DL-130, PRO-SD-1DL-130, PRO-SD-1DL-120, ENG-MT-SD-CB-A-110, ENG-SH-SD-CB-A-110, ENG-MS-SD-CB-A-110, PRO-SW-1DL-110 SS, ENG-MT-SW-ML-A-100, ENG-SH-SW-ML-A-110, MS-CS-SW SS, ENG-MS-SW-ML-A-110, PRO-SW-1DL-100, ENG-MT-SW-ML-A-110, PRO-LV-DP-1DL-100, PRO-LV-DP-DL-100, CON-LV-DP-120, CON-LV-DP-190, CON-LV-DP-110, ENG-SH-MSN-A-120, ENG-SH-CTV-A-110, ENG-MS-CTV-A-110, ENG-MT-CTV-A-100, PRO-CTV-1DL-100, MS-CS-TE SS, CO-TE-MH-160, CO-TE-CTV-110, T/C-RD FF, MS-CF-MV | 4d |
|  | RD | **Road Works** |  | 2027-02-07 | 2027-02-20 |  |  |
| T/C-RD |  | Testing and Commissioning of Road Works | 12d | 2027-02-07 | 2027-02-20 | CO-RD-PV-160, CO-RD-PV-170, CO-RD-F-RM-180, CO-RD-F-TS-120, CON-RD-MR-150, CO-RD-PV-180, CO-RD-PV-190, CO-RD-F-RM-190, CO-RD-F-TS-130, CO-RD-PV-200, CO-RD-PV-210, CO-RD-F-RM-200, CO-RD-F-TS-140, CO-RD-PV-220, CO-RD-PV-230, CO-RD-F-RM-210, CO-RD-F-TS-150, CO-RD-PV-240, CO-RD-PV-250, CO-RD-F-RM-220, CO-RD-F-TS-160, CON-RD-MR-230, CO-RD-PV-260, CO-RD-PV-270, CO-RD-F-RM-230, CO-RD-F-TS-170, CON-RD-MR-250, CO-RD-PV-280, CO-RD-PV-290, CO-RD-F-RM-240, CO-RD-F-TS-180, CON-RD-MR-270, CO-RD-PV-300, CO-RD-PV-310, CO-RD-F-RM-250, CO-RD-F-TS-190, CON-RD-MR-290, CO-RD-PV-320, CO-RD-PV-330, CO-RD-F-RM-260, CO-RD-F-TS-200, CON-RD-MR-310, PRO-R25-RD-DL-170, PRO-RD-1DL-130, PRO-R25-RD-DL-100, PRO-RD-1DL-100, MS-MM-140, MS-MM-130, MS-CS-RD SS, ENG-SH-RD-A-100, ENG-SH-RD-A-110, ENG-MS-RD-A-30, ENG-MS-RD-A-20, ENG-MS-RD-A-10, ENG-MS-RD-A-40, CO-TE-MH-190, CO-TE-DW-160, CO-SL-CL-300, CO-SL-LP-380, CON-LV-HC-150, CON-LV-ML-150, CO-MV-ML-300, CO-IR-ML-180, CO-PW-FH-190, CO-PW-VC-250, CO-PW-ML-160, CO-TSE-ML-230, CO-SW-ML-160, CO-SW-MH-250, CO-SD-CB-200, CO-SD-ML-160, CO-SD-MH-260, CO-EW-210_R, CO-SL-LP-520, PRO-R25-RD-DL-110, PRO-RD-1DL-110, CO-EW-220, CO-SD-ML-190, CO-SD-MH-300, CO-SD-CB-230, CO-SW-ML-190, CO-SW-MH-300, CO-PW-ML-190, CO-PW-VC-280, CO-IR-ML-230, CO-TSE-ML-280, CO-MV-ML-330, CO-SL-LP-430, CO-SL-CL-330, CON-LV-HC-180, CON-LV-ML-180, CO-TE-DW-200, CO-PW-FH-220, CO-TE-MH-220, CON-LV-DP-180, CO-RD-PB-150 SS, CO-IR-TF-210, CO-TE-CTV-210, CO-EW-230, CO-SD-ML-220, CO-PW-ML-220, CO-PW-VC-310, CO-TSE-ML-330, CO-MV-ML-360, CO-SL-LP-480, CO-SL-CL-360, CON-LV-HC-210, CON-LV-ML-210, CO-TE-DW-240, CO-PW-FH-250, CO-TE-MH-250, CO-RD-PB-140, CO-IR-ML-380, CO-SD-MH-220, PRO-SD-1DL-100, CO-SD-MH-200, PRO-R25-SD-DL-100, CO-SD-MH-190, ENG-MT-SD-ML-A-100, MS-CS-SD SS, ENG-MS-SD-ML-A-110, ENG-MT-SD-ML-A-110, ENG-SH-SD-ML-A-110, CO-SD-MH-180, CO-SD-ML-130, PRO-R25-SD-DL-110, PRO-R25-SD-DL-130, PRO-SD-1DL-130, PRO-SD-1DL-120, ENG-MT-SD-CB-A-110, ENG-SH-SD-CB-A-110, ENG-MS-SD-CB-A-110, PRO-SW-1DL-110 SS, ENG-MT-SW-ML-A-100, ENG-SH-SW-ML-A-110, MS-CS-SW SS, ENG-MS-SW-ML-A-110, PRO-SW-1DL-100, ENG-MT-SW-ML-A-110, PRO-LV-DP-1DL-100, PRO-LV-DP-DL-100, CON-LV-DP-120, CON-LV-DP-190, CON-LV-DP-110, ENG-SH-MSN-A-120, ENG-SH-CTV-A-110, ENG-MS-CTV-A-110, ENG-MT-CTV-A-100, PRO-CTV-1DL-100, MS-CS-TE SS, CO-TE-MH-160, CO-TE-CTV-110, T/C-CTV FF, MS-CF-RD, MS-CF-RD SS | 3d |
|  | 1 | **Utility Buildings** |  | 2027-02-02 | 2027-03-03 |  |  |
| T/C-CTV |  | Testing and Commissioning of Guard Room and Boundary Fence | 16d | 2027-02-02 | 2027-02-20 | A1240, A1100, CON-RD-MR-150, CON-RD-MR-230, CON-RD-MR-250, CON-RD-MR-270, CON-RD-MR-290, CON-RD-MR-310, PRO-R25-RD-DL-110, PRO-RD-1DL-110, CO-EW-220, CO-SD-ML-190, CO-SD-MH-300, CO-SD-CB-230, CO-SW-ML-190, CO-SW-MH-300, CO-PW-ML-190, CO-PW-VC-280, CO-IR-ML-230, CO-TSE-ML-280, CO-MV-ML-330, CO-SL-LP-430, CO-SL-CL-330, ENG-MS-RD-A-20, ENG-MS-RD-A-30, ENG-MS-RD-A-40, PRO-R25-RD-DL-100, CON-LV-HC-180, CON-LV-ML-180, ENG-MS-RD-A-10, ENG-SH-RD-A-100, ENG-SH-RD-A-110, MS-CS-RD SS, PRO-RD-1DL-100, MS-MM-130, MS-MM-140, CO-TE-DW-200, CO-PW-FH-220, CO-TE-MH-220, CON-LV-DP-180, CO-RD-PB-150 SS, CO-IR-TF-210, CO-TE-CTV-210, CO-EW-230, CO-SD-ML-220, CO-PW-ML-220, CO-PW-VC-310, CO-TSE-ML-330, CO-MV-ML-360, CO-SL-LP-480, CO-SL-CL-360, CON-LV-HC-210, CON-LV-ML-210, CO-TE-DW-240, CO-PW-FH-250, CO-TE-MH-250, CO-RD-PB-140, CO-IR-ML-380, CO-SD-MH-220, PRO-SD-1DL-100, CO-SD-MH-200, PRO-R25-SD-DL-100, CO-SD-MH-190, ENG-MT-SD-ML-A-100, MS-CS-SD SS, ENG-MS-SD-ML-A-110, ENG-MT-SD-ML-A-110, ENG-SH-SD-ML-A-110, CO-SD-MH-180, CO-SD-ML-130, PRO-R25-SD-DL-110, PRO-R25-SD-DL-130, PRO-SD-1DL-130, PRO-SD-1DL-120, ENG-MT-SD-CB-A-110, ENG-SH-SD-CB-A-110, ENG-MS-SD-CB-A-110, PRO-SW-1DL-110 SS, ENG-MT-SW-ML-A-100, ENG-SH-SW-ML-A-110, MS-CS-SW SS, ENG-MS-SW-ML-A-110, PRO-SW-1DL-100, ENG-MT-SW-ML-A-110, PRO-LV-DP-1DL-100, PRO-LV-DP-DL-100, CON-LV-DP-120, CON-LV-DP-190, CON-LV-DP-110, ENG-SH-MSN-A-120, ENG-SH-CTV-A-110, ENG-MS-CTV-A-110, ENG-MT-CTV-A-100, PRO-CTV-1DL-100, MS-CS-TE SS, CO-TE-MH-160, CO-TE-CTV-110 | 3d |
| T/C-CTV20 |  | Testing and Commissioning of Softscape And Planting | 16d | 2027-02-04 | 2027-02-22 | CO-LS-PL-160, CO-LS-SF-170, T/C-CTV FF | 9d |
| T/C-CTV10 |  | Testing and Commissioning of Utility Buildings | 16d | 2027-02-14 | 2027-03-03 | CO-UB-PS-390, PRO-R25-RD-DL-110, PRO-RD-1DL-110, CO-EW-220, CO-SD-ML-190, CO-SD-MH-300, CO-SD-CB-230, CO-SW-ML-190, CO-SW-MH-300, CO-PW-ML-190, CO-PW-VC-280, CO-IR-ML-230, CO-TSE-ML-280, CO-MV-ML-330, CO-SL-LP-430, CO-SL-CL-330, ENG-MS-RD-A-20, ENG-MS-RD-A-30, ENG-MS-RD-A-40, PRO-R25-RD-DL-100, CON-LV-HC-180, CON-LV-ML-180, ENG-MS-RD-A-10, ENG-SH-RD-A-100, ENG-SH-RD-A-110, MS-CS-RD SS, PRO-RD-1DL-100, MS-MM-130, MS-MM-140, CO-TE-DW-200, CO-PW-FH-220, CO-TE-MH-220, CON-LV-DP-180, CO-RD-PB-150 SS, CO-IR-TF-210, CO-TE-CTV-210, CO-EW-230, CO-SD-ML-220, CO-PW-ML-220, CO-PW-VC-310, CO-TSE-ML-330, CO-MV-ML-360, CO-SL-LP-480, CO-SL-CL-360, CON-LV-HC-210, CON-LV-ML-210, CO-TE-DW-240, CO-PW-FH-250, CO-TE-MH-250, CO-RD-PB-140, CO-IR-ML-380, CO-SD-MH-220, PRO-SD-1DL-100, CO-SD-MH-200, PRO-R25-SD-DL-100, CO-SD-MH-190, ENG-MT-SD-ML-A-100, MS-CS-SD SS, ENG-MS-SD-ML-A-110, ENG-MT-SD-ML-A-110, ENG-SH-SD-ML-A-110, CO-SD-MH-180, CO-SD-ML-130, PRO-R25-SD-DL-110, PRO-R25-SD-DL-130, PRO-SD-1DL-130, PRO-SD-1DL-120, ENG-MT-SD-CB-A-110, ENG-SH-SD-CB-A-110, ENG-MS-SD-CB-A-110, PRO-SW-1DL-110 SS, ENG-MT-SW-ML-A-100, ENG-SH-SW-ML-A-110, MS-CS-SW SS, ENG-MS-SW-ML-A-110, PRO-SW-1DL-100, ENG-MT-SW-ML-A-110, PRO-LV-DP-1DL-100, PRO-LV-DP-DL-100, CON-LV-DP-120, CON-LV-DP-190, CON-LV-DP-110, ENG-SH-MSN-A-120, ENG-SH-CTV-A-110, ENG-MS-CTV-A-110, ENG-MT-CTV-A-100, PRO-CTV-1DL-100, MS-CS-TE SS, PRO-SPS-LL-MSI-10, CO-UB-PWT-170, CO-UB-PS-320, PRO-TSE-LL-MSI-30, CO-UB-IRT-210, CO-TE-MH-160, CO-TE-CTV-110, T/C-CTV FF, CO-SU-FE-N-EL-310 | 1d |
|  | 1 | **Handing over and close out** |  | 2027-02-07 | 2027-03-04 |  |  |
|  | 2 | **As-Built** |  | 2027-02-07 | 2027-03-04 |  |  |
| HO-140 |  | Submission As-Built Drawing For Roads Network | 10d | 2027-02-07 | 2027-02-17 | T/C-RD SS | 13d |
| HO-150 |  | Submission As-Built Drawing For Street Lighting Network | 10d | 2027-02-07 | 2027-02-17 | T/C-SL SS | 13d |
| HO-160 |  | Submission As-Built Drawing For Telecom and Light Current Networks | 10d | 2027-02-07 | 2027-02-17 | T/C-TE SS | 13d |
| HO-100 |  | Submission As-Built Drawing For Sewage Network | 10d | 2027-02-11 | 2027-02-22 | T/C-SW SS, MS-MO-50 | 9d |
| HO-130 |  | Submission As-Built Drawing For Pond | 10d | 2027-02-11 | 2027-02-22 | T/C-DPO SS, MS-MO-20, MS-MO-50 | 9d |
| HO-180 |  | Submission As-Built Drawing For Irrigation Network | 10d | 2027-02-11 | 2027-02-22 | T/C-IR SS | 9d |
| HO-200 |  | Submission As-Built Drawing For Storm Network | 10d | 2027-02-11 | 2027-02-22 | T/C-SD SS | 9d |
| HO-210 |  | Submission As-Built Drawing For Utility Buildings | 8d | 2027-02-24 | 2027-03-04 | T/C-CTV10 FF, T/C-CTV, CO-UB-CR-360, CO-SU-FE-N-EL-270, HO-120 FF | 0d |
| HO-170 |  | Submission As-Built Drawing For Medium Voltage Network | 7d | 2027-02-25 | 2027-03-04 | T/C-MV SS, TC-LV-100 | 0d |
| HO-190 |  | As-Built Drawing For Potable Water Network | 7d | 2027-02-25 | 2027-03-04 | T/C-PW SS, T/C-TSE-10 | 0d |
|  | 1 | **De-Mobilization Works** |  | 2027-02-09 | 2027-03-01 |  |  |
| HO-230 |  | Remove Temporary Car Shades | 10d | 2027-02-09 | 2027-02-20 | T/C-RD SS, T/C-RD FF | 11d |
| HO-220 |  | Removing Portable Caravan | 7d | 2027-02-13 | 2027-02-20 | T/C-RD SS, T/C-RD FF | 3d |
| HO-120 |  | Remove material stock & Storage area | 8d | 2027-02-21 | 2027-03-01 | T/C-RD SS, T/C-RD FF, HO-220 | 3d |
|  | 3 | **Handing Over** |  | 2027-02-11 | 2027-03-04 |  |  |
| HO-240 |  | Final Walkthrough and Inspection | 8d | 2027-02-11 | 2027-02-20 | T/C-RD SS, T/C-RD FF | 11d |
| HO-250 |  | Review B.O.Q Qty. to ensure compliance with the actual status | 8d | 2027-02-11 | 2027-02-20 | T/C-RD SS, T/C-RD FF | 11d |
| HO-260 |  | Review FIR Approval to ensure compliance with the actual status | 8d | 2027-02-11 | 2027-02-20 | T/C-RD SS, T/C-RD FF | 11d |
| HO-270 |  | Review the sample drawing to ensure compliance with the actual status | 8d | 2027-02-11 | 2027-02-20 | T/C-RD SS, T/C-RD FF | 3d |
| HO-280 |  | Punch List Completion | 8d | 2027-02-21 | 2027-03-01 | T/C-RD SS, T/C-RD FF, HO-270 | 3d |
| HO-110 |  | Final Testing Work | 7d | 2027-02-25 | 2027-03-04 | T/C-RD SS, T/C-RD FF, T/C-SD | 0d |

## Version 2 (data date 2026-10-05, saved 2026-10-07, file DHRT-01-001-BL00.R01-41update5-10-26.xer)

Note of the change: Renumber project folders 01–23 in order (after removing projects 12 and 25)

Last finish 2027-03-04 → 2027-06-17 (+105d). Complete tasks 252 → 268.

Changed:

| ID | Task | Start | Finish | Total float | Other |
| --- | --- | --- | --- | --- | --- |
| MS | **Key Milestones** |  | 2027-03-04 → 2027-06-17 (+105d) |  |  |
| CM | **Contractual Milestones** |  | 2027-03-04 → 2027-06-17 (+105d) |  |  |
| MS-CF-ENG | Completion of Submitting and Approval of Shopdrawing and Materials | 2026-07-20 → 2026-10-25 (+97d) | 2026-07-20 → 2026-10-25 (+97d) | 3d → none |  |
| MS-CF-SW | Completion of Construction Works for Sewage Network | 2026-11-04 → 2027-02-08 (+96d) | 2026-11-04 → 2027-02-08 (+96d) | 14d → none |  |
| MS-CF-MV | Completion of Construction Works for Medium Voltage Network | 2026-12-13 → 2027-03-22 (+99d) | 2026-12-13 → 2027-03-22 (+99d) | 11d → none |  |
| MS-MO-20 | Completion of Storm Drainage Ponds | 2026-12-31 → 2027-04-10 (+100d) | 2026-12-31 → 2027-04-10 (+100d) | 9d → none |  |
| MS-CF-IR | Completion of Construction Works for Irrigation Network | 2027-01-06 → 2027-04-15 (+99d) | 2027-01-06 → 2027-04-15 (+99d) | 30d → none |  |
| MS-CF-LO | Completion of Construction Works for Low Voltage Network | 2027-01-06 → 2027-04-15 (+99d) | 2027-01-06 → 2027-04-15 (+99d) | 30d → none |  |
| MS-CF-PW | Completion of Construction Works for Potable Water Network | 2027-01-06 → 2027-04-15 (+99d) | 2027-01-06 → 2027-04-15 (+99d) | 30d → none |  |
| MS-CF-RD | Completion of Construction Works for Road Works | 2027-01-06 → 2027-04-15 (+99d) | 2027-01-06 → 2027-04-15 (+99d) | 29d → none |  |
| MS-CF-SD | Completion of Construction Works for Storm Drainage Network | 2027-01-06 → 2027-04-15 (+99d) | 2027-01-06 → 2027-04-15 (+99d) | 30d → none |  |
| MS-CF-SL | Completion of Construction Works for Street Lighting Network | 2027-01-06 → 2027-04-15 (+99d) | 2027-01-06 → 2027-04-15 (+99d) | 30d → none |  |
| MS-CF-TE | Completion of Construction Works for Telecom and Light Current Networks | 2027-01-06 → 2027-04-15 (+99d) | 2027-01-06 → 2027-04-15 (+99d) | 30d → none |  |
| MS-CF-TSE | Completion of Construction Works for Treated Sewage Effluent Network | 2027-01-24 → 2027-05-03 (+99d) | 2027-01-24 → 2027-05-03 (+99d) | 34d → none |  |
| MS-MO-60 | Completion of Irrigation and Potable Tank | 2027-02-07 → 2027-05-23 (+105d) | 2027-02-07 → 2027-05-23 (+105d) | 22d → none |  |
| MS-MO-10 | Completion of Sewage Pump Station | 2027-02-28 → 2027-05-26 (+87d) | 2027-02-28 → 2027-05-26 (+87d) | 4d → none |  |
| MS-MO-50 | Completion of Water Pump Station | 2027-02-10 → 2027-05-26 (+105d) | 2027-02-10 → 2027-05-26 (+105d) | 0d → none |  |
| MS-MO-40 | Completion of Control Room | 2027-03-03 → 2027-06-14 (+103d) | 2027-03-03 → 2027-06-14 (+103d) | 1d → none |  |
| MS-CF-PF | Project Completion Date | 2027-03-04 → 2027-06-17 (+105d) | 2027-03-04 → 2027-06-17 (+105d) | 0d → none |  |
| CM1 | **Control Milestones** |  | 2026-06-23 → 2026-09-28 (+97d) |  |  |
| 2 | **The Employer** |  | 2026-06-23 → 2026-09-28 (+97d) |  |  |
| MS-MM-120 | Receipt of Advance Payment for the Project From The Employer | 2026-06-23 → 2026-09-28 (+97d) | 2026-06-23 → 2026-09-28 (+97d) | 8d → none |  |
| ENG | **Engineering Works** |  | 2026-07-20 → 2026-10-25 (+97d) |  |  |
| SD11 | **Material Submittals and Approvals** |  | 2026-07-20 → 2026-10-25 (+97d) |  |  |
| ENG-MT-TSE-CV-A-150 | Material Approval for Works for Control Room |  |  |  | resources 100 mm thickness lean concrete under the foundation; Foundation; Grade Beams; Beams; Columns; Slabs; Lightweight Concrete Roof insulation as per Architect's specification; Hollow Concrete masonry unit, 100 mm thick wall for internal block; Hollow Concrete masonry unit, 150 mm thick wall for internal block; Insulated brickwork. with expanded polystyrene 200mm thick for External block; Hollow Concrete masonry unit, 300 mm thick wall for External block; 2 perpendicular layers of cold bitumen coats; 2 layer of 4mm HDPE membrane, 2 perpendicular layers cold bitumen coats; 1 layer EPOXY Paint 300 micron; Membrane fully bonded to prime deck and upstand; Geotextile Filter membrane uv resistance; 85mm thick thermal insulation; 1.5mm thick epdm waterproofing membrane; D1 - 1100 mm width x 2200 mm height; D2 - 1070 mm width x 2225 mm height; D3 - 1200 mm width x 3000 mm height; D4 - 1800 mm width x 3000 mm height; Roller Shuter - 3000mm width x 4000mm height; D1' 1900mm width x 2950mm height; D2' 1200mm width x 2150mm height; D3' 800mm width x 2050mm height; D4' 1700mm width x 2050mm height; 1500 mm width x 1200 mm high (W01); 1200 mm width x 1200 mm high (W02); 1000 mm width x 2400 mm high (L1); Supply and install External plastering to walls and columns min. 15mm thick with cement mortar of specified grade including galvanized mesh, corner beads, angle beads, CE bonds to rough and smooth plaster complete the work as per drawing & specification.; Supply and install 2 coats of weatherproof paint at walls including one prime coat and two coats and putty to give smooth Surface as a base for paint including fiberglass tape to joints and all other accessories as per manufacturers approved specification; Supply and install internal plastering to walls and columns min. 15mm thick with cement mortar of specified grade including galvanized mesh, corner beads, angle beads, CE bonds to rough and smooth plaster complete the work as per drawing & specification.; Supply and install 2 coats of epoxy paint at walls including one prime coat and two coats and putty to give smooth Surface as a base for paint including fiberglass tape to joints and all other accessories as per manufacturers approved specification; Supply and install 300*300mm glazed ceramic wall tiles on cement mortar and including rough and smooth plaster, galvanized mesh, corner beads, angle beads, CE bonds; Acid Proof Tiles; Supply and install 600*600mm porcelain tiles with approved quality on 30 mm mortar including sand fill material as approved by the Client; Supply and install 12.5mm thk, gypsum board suspended ceiling including suspension system, paints as required specification and material as approved by the Client including frames supports, access openings and all other accessories to complete as shown in; 4.5 KG CO2 Type Fire Extinguishers; 6 KG ABC Type Fire Extinguishers; 15 mm dia.; 25 mm dia.; 32 mm dia.; 40 mm dia.; 80 mm dia.; 200 mm dia.; 250 mm dia.; Supply and installation of western water closet, flush tank type, heavy duty, one piece SASO certified, approval of client, dimesion not less than 40 cm width, 68 cm length including all other accessories as per drawings and specification; Supply and installation of urinal, heavy duty, one piece SASO certified, approval of client, including all other accessories as per drawings and specification; Supply and installation of Bib tap with Perenial Hose (BPH) with stainless steel flexible hose and cast brass chromeplated hand including all other accessories to complete as per drawing and specification.; Supply, installation, testing and commissioning of Lavatory / wash basin with counter for toilets, built in soap dispenser, mixer, single lever arm including all accessories as per drawings and specification and to the approval of the client; Provide and install paper towel dispenser, surface mounted, satin finish stainless steel as per approved sample including accessories.; Provide and install mirror as per approved sample including frames, backing and all accessories to complete.; Provide and install towel ring, surface mounted, satin finish stainless steel as per approved sample including accessories.; Hose Bib; Valve Chamber; Retarding Chamber; Inspection Chamber; Neutralization pit 1000x1000mm; 25mm diameter; 32mm diameter; 40mm diameter; 50mm diameter; 75mm diameter; 80mm diameter; 100mm diameter; 110mm diameter; 15mm diameter; 20mm diameter; 150mm diameter; 200mm diameter; 250mm diameter; 13mm diameter; Gully Trap; Floor drain 75mm; Floor cleanout 110mm; Roof drain; GRP water tanks capacity of each 1000 liter complete with all fittings, all valves and concrete pad; Water Heater 30ltr; Actual capacity 1.0 Ton; Actual capacity 1.5 Ton; Supply and install flexible duct with insulation; size 8 inch dia.; Supply and install flexible duct with insulation; size 10 inch dia.; Package Unit 57.4 kW "thermal"; Variable Air Volume (VAV 01); Variable Air Volume (VAV 02); Variable Air Volume (VAV 03); Variable Air Volume (VAV 04); Variable Air Volume (VAV 05); Variable Air Volume (VAV 06); Galvanized sheet metal ducts; Supply Liner Slot diffuser 3 slots 1 inch; Return Liner Slot diffuser 3 slots 1 inch; Exhaust Grill 150mm x 150mm; Exhast Air fan 515 l/s @ 150 pa; Exhast Air fan 3200 l/s @ 100 pa; Sand trap louver 2400mm x 1000mm; Sound attenuator size 1050 x 650 x 1000 m; Fire suppression system FM200 57 kg fill capacity consists of 2 cylinders, duty + standby, complete with all required mechanical, electrical , and control items to install, test, and operate the system.; Fire suppression system NOVEC 1230 134.1 kg fill capacity consists of 2 cylinders, duty + standby, complete with all required mechanical, electrical , and control items to install, test, and operate the system.; Fire suppression system NOVEC 1230 29.2 kg fill capacity consists of 2 cylinders, duty + standby, complete with all required mechanical, electrical , and control items to install, test, and operate the system.; Fire suppression system NOVEC 1230 53.5 kg fill capacity consists of 2 cylinders, duty + standby, complete with all required mechanical, electrical , and control items to install, test, and operate the system.; Fire suppression system NOVEC 1230 82.3 kg fill capacity consists of 2 cylinders, duty + standby, complete with all required mechanical, electrical , and control items to install, test, and operate the system.; Fire suppression system NOVEC 1230 42.5 kg fill capacity consists of 2 cylinders, duty + standby, complete with all required mechanical, electrical , and control items to install, test, and operate the system.; Supply and install steel ladder with cage at pump room for as per drawings and specification.; Overhead Travelling Crane; lifting capacity 1.50 ton manual type all to manufacturer's detail and specifications. - PS-OC-1; Hot dipped Galvanized steel Trench Grating; Hot dipped Galvanized steel Channel Cover Plate; Steel Frame and Cover 1200 x 1200; Vent Cowl (Standard Size); Steel Handrail of 1.2m height; 30W LED linear Pendant lighting; 30W LED Emergency linear Pendant lighting; 47W LED linear Pendant lighting; 47W LED Emergency linear Pendant lighting; 13W recess mounted LED down light fitting; 13W recess emergency mounted LED down light fitting with 1.5 Hr Battery; 10.4W LED Exit light with 1.5 Hr Battery; Distribution board (MDB-PR-01); Distribution board (LPDB-PR-01); Distribution board (MDB-CB-01); Distribution board (LPDB-CR-01); 13A,1? 230V Twin socket outlet with switch; 13A,1? 230V Industrial socket outlet with switch; 13A, Twin Socket outlet, Weather Proof; 400A, 3P Disconnect switch; 30A, 2P AC Disconnect Switch; 30A, 3P AC Disconnect Switch; 60A, 3P AC Disconnect Switch; 20A Duplex Receptacle Floor Mounted; Single gang Lighting switch; Double gang Lighting switch; 2way Single gang Lighting switch; Cable Tray 300 mm X 100 mm; 4CX6 Cu. XLPE FRLSZH Cable; 4CX10 Cu. XLPE FRLSZH Cable; 4CX16 Cu. XLPE FRLSZH Cable; 4CX25 Cu. XLPE FRLSZH Cable; 4CX35 Cu. XLPE FRLSZH Cable; 4CX185 Cu. XLPE FRLSZH Cable; 120mm2 Tinned copper wire; Grounding rod 20mmX3m; Grounding rod with Pit 20mmX3m; Earthing Bar; Cu earth strip 25X4 mm; 1.5m Air terminal; 4mm2 Cu./FRLSZH Cable; 6mm2 Cu./FRLSZH Cable; 10mm2 Cu./FRLSZH Cable; 16mm2 Cu./FRLSZH Cable; 95mm2 Cu./FRLSZH Cable; 120mm2 Cu./FRLSZH Cable; 30KVA, 400V, 3PH, 60Hz UPS; CB-UPS-01 panel; Supply, install and connection of a SCADA server cum workstation complete with network rack, network switch, sensors, printer, armoured cables with cable tray & conduits, level transmitter, liquid flow meter, quality sensor (COD,BOD,pH), pressure transmit; Fire Alarm Control panel with fire alarm zoning with Mimic panel with fire alarm zoning; Supply, install to site and installation of the Aspirating Smoke Detector complete with accessories and pipes; Supply, install to site and installation of the addressable manual call point with operation safety glass breaking and pushbutton; Supply, install to site and installation of the photoelectric smoke detector with base; Supply, install to site and installation of the heat detector with base; Supply, install to site and installation of multi criteria sensors with base; Supply, install to site and installation of Hydrogen detector; Supply, install to site and installation of Duct detector; Sounder With Beacon; Remote LED Indicator; Single Channel Interface Module; Addressable Control module for Sounders; Addressable relay module for interface; Addressable monitor module for interface; Supply, install to site and installation Fire loop cable; Supply, install to site and installation of power cable; Fire Fighter’s Telephone Centre; Fireman’s Telephone Jack; Voice Command Center; DACT (Auto - Dailer) for 24x7 Civil Defence; Transmission Communication cable - Fiber Optics; Transmission Communication cable - Ethernet Cable; Supply, install to site and installation of power supply system for fire alarm control panel; acoustical tiles suspended ceiling 600x600mm concealed metal → CB-UPS-01 panel; Supply, install and connection of a SCADA server cum workstation complete with network rack, network switch, sensors, printer, armoured cables with cable tray & conduits, level transmitter, liquid flow meter, quality sensor (COD,BOD,pH), pressure transmit; Fire Alarm Control panel with fire alarm zoning with Mimic panel with fire alarm zoning; Supply, install to site and installation of the Aspirating Smoke Detector complete with accessories and pipes; Supply, install to site and installation of the addressable manual call point with operation safety glass breaking and pushbutton; Supply, install to site and installation of the photoelectric smoke detector with base; Supply, install to site and installation of the heat detector with base; Supply, install to site and installation of multi criteria sensors with base; Supply, install to site and installation of Hydrogen detector; Supply, install to site and installation of Duct detector; Sounder With Beacon; Remote LED Indicator; Single Channel Interface Module; Addressable Control module for Sounders; Addressable relay module for interface; Addressable monitor module for interface; Supply, install to site and installation Fire loop cable; Supply, install to site and installation of power cable; Fire Fighter’s Telephone Centre; Fireman’s Telephone Jack; Voice Command Center; DACT (Auto - Dailer) for 24x7 Civil Defence; Transmission Communication cable - Fiber Optics; Transmission Communication cable - Ethernet Cable; Supply, install to site and installation of power supply system for fire alarm control panel; acoustical tiles suspended ceiling 600x600mm concealed metal; 100 mm thickness lean concrete under the foundation; Foundation; Grade Beams; Beams; Columns; Slabs; Lightweight Concrete Roof insulation as per Architect's specification; Hollow Concrete masonry unit, 100 mm thick wall for internal block; Hollow Concrete masonry unit, 150 mm thick wall for internal block; Insulated brickwork. with expanded polystyrene 200mm thick for External block; Hollow Concrete masonry unit, 300 mm thick wall for External block; 2 perpendicular layers of cold bitumen coats; 2 layer of 4mm HDPE membrane, 2 perpendicular layers cold bitumen coats; 1 layer EPOXY Paint 300 micron; Membrane fully bonded to prime deck and upstand; Geotextile Filter membrane uv resistance; 85mm thick thermal insulation; 1.5mm thick epdm waterproofing membrane; D1 - 1100 mm width x 2200 mm height; D2 - 1070 mm width x 2225 mm height; D3 - 1200 mm width x 3000 mm height; D4 - 1800 mm width x 3000 mm height; Roller Shuter - 3000mm width x 4000mm height; D1' 1900mm width x 2950mm height; D2' 1200mm width x 2150mm height; D3' 800mm width x 2050mm height; D4' 1700mm width x 2050mm height; 1500 mm width x 1200 mm high (W01); 1200 mm width x 1200 mm high (W02); 1000 mm width x 2400 mm high (L1); Supply and install External plastering to walls and columns min. 15mm thick with cement mortar of specified grade including galvanized mesh, corner beads, angle beads, CE bonds to rough and smooth plaster complete the work as per drawing & specification.; Supply and install 2 coats of weatherproof paint at walls including one prime coat and two coats and putty to give smooth Surface as a base for paint including fiberglass tape to joints and all other accessories as per manufacturers approved specification; Supply and install internal plastering to walls and columns min. 15mm thick with cement mortar of specified grade including galvanized mesh, corner beads, angle beads, CE bonds to rough and smooth plaster complete the work as per drawing & specification.; Supply and install 2 coats of epoxy paint at walls including one prime coat and two coats and putty to give smooth Surface as a base for paint including fiberglass tape to joints and all other accessories as per manufacturers approved specification; Supply and install 300*300mm glazed ceramic wall tiles on cement mortar and including rough and smooth plaster, galvanized mesh, corner beads, angle beads, CE bonds; Acid Proof Tiles; Supply and install 600*600mm porcelain tiles with approved quality on 30 mm mortar including sand fill material as approved by the Client; Supply and install 12.5mm thk, gypsum board suspended ceiling including suspension system, paints as required specification and material as approved by the Client including frames supports, access openings and all other accessories to complete as shown in; 4.5 KG CO2 Type Fire Extinguishers; 6 KG ABC Type Fire Extinguishers; 15 mm dia.; 25 mm dia.; 32 mm dia.; 40 mm dia.; 80 mm dia.; 200 mm dia.; 250 mm dia.; Supply and installation of western water closet, flush tank type, heavy duty, one piece SASO certified, approval of client, dimesion not less than 40 cm width, 68 cm length including all other accessories as per drawings and specification; Supply and installation of urinal, heavy duty, one piece SASO certified, approval of client, including all other accessories as per drawings and specification; Supply and installation of Bib tap with Perenial Hose (BPH) with stainless steel flexible hose and cast brass chromeplated hand including all other accessories to complete as per drawing and specification.; Supply, installation, testing and commissioning of Lavatory / wash basin with counter for toilets, built in soap dispenser, mixer, single lever arm including all accessories as per drawings and specification and to the approval of the client; Provide and install paper towel dispenser, surface mounted, satin finish stainless steel as per approved sample including accessories.; Provide and install mirror as per approved sample including frames, backing and all accessories to complete.; Provide and install towel ring, surface mounted, satin finish stainless steel as per approved sample including accessories.; Hose Bib; Valve Chamber; Retarding Chamber; Inspection Chamber; Neutralization pit 1000x1000mm; 25mm diameter; 32mm diameter; 40mm diameter; 50mm diameter; 75mm diameter; 80mm diameter; 100mm diameter; 110mm diameter; 15mm diameter; 20mm diameter; 150mm diameter; 200mm diameter; 250mm diameter; 13mm diameter; Gully Trap; Floor drain 75mm; Floor cleanout 110mm; Roof drain; GRP water tanks capacity of each 1000 liter complete with all fittings, all valves and concrete pad; Water Heater 30ltr; Actual capacity 1.0 Ton; Actual capacity 1.5 Ton; Supply and install flexible duct with insulation; size 8 inch dia.; Supply and install flexible duct with insulation; size 10 inch dia.; Package Unit 57.4 kW "thermal"; Variable Air Volume (VAV 01); Variable Air Volume (VAV 02); Variable Air Volume (VAV 03); Variable Air Volume (VAV 04); Variable Air Volume (VAV 05); Variable Air Volume (VAV 06); Galvanized sheet metal ducts; Supply Liner Slot diffuser 3 slots 1 inch; Return Liner Slot diffuser 3 slots 1 inch; Exhaust Grill 150mm x 150mm; Exhast Air fan 515 l/s @ 150 pa; Exhast Air fan 3200 l/s @ 100 pa; Sand trap louver 2400mm x 1000mm; Sound attenuator size 1050 x 650 x 1000 m; Fire suppression system FM200 57 kg fill capacity consists of 2 cylinders, duty + standby, complete with all required mechanical, electrical , and control items to install, test, and operate the system.; Fire suppression system NOVEC 1230 134.1 kg fill capacity consists of 2 cylinders, duty + standby, complete with all required mechanical, electrical , and control items to install, test, and operate the system.; Fire suppression system NOVEC 1230 29.2 kg fill capacity consists of 2 cylinders, duty + standby, complete with all required mechanical, electrical , and control items to install, test, and operate the system.; Fire suppression system NOVEC 1230 53.5 kg fill capacity consists of 2 cylinders, duty + standby, complete with all required mechanical, electrical , and control items to install, test, and operate the system.; Fire suppression system NOVEC 1230 82.3 kg fill capacity consists of 2 cylinders, duty + standby, complete with all required mechanical, electrical , and control items to install, test, and operate the system.; Fire suppression system NOVEC 1230 42.5 kg fill capacity consists of 2 cylinders, duty + standby, complete with all required mechanical, electrical , and control items to install, test, and operate the system.; Supply and install steel ladder with cage at pump room for as per drawings and specification.; Overhead Travelling Crane; lifting capacity 1.50 ton manual type all to manufacturer's detail and specifications. - PS-OC-1; Hot dipped Galvanized steel Trench Grating; Hot dipped Galvanized steel Channel Cover Plate; Steel Frame and Cover 1200 x 1200; Vent Cowl (Standard Size); Steel Handrail of 1.2m height; 30W LED linear Pendant lighting; 30W LED Emergency linear Pendant lighting; 47W LED linear Pendant lighting; 47W LED Emergency linear Pendant lighting; 13W recess mounted LED down light fitting; 13W recess emergency mounted LED down light fitting with 1.5 Hr Battery; 10.4W LED Exit light with 1.5 Hr Battery; Distribution board (MDB-PR-01); Distribution board (LPDB-PR-01); Distribution board (MDB-CB-01); Distribution board (LPDB-CR-01); 13A,1? 230V Twin socket outlet with switch; 13A,1? 230V Industrial socket outlet with switch; 13A, Twin Socket outlet, Weather Proof; 400A, 3P Disconnect switch; 30A, 2P AC Disconnect Switch; 30A, 3P AC Disconnect Switch; 60A, 3P AC Disconnect Switch; 20A Duplex Receptacle Floor Mounted; Single gang Lighting switch; Double gang Lighting switch; 2way Single gang Lighting switch; Cable Tray 300 mm X 100 mm; 4CX6 Cu. XLPE FRLSZH Cable; 4CX10 Cu. XLPE FRLSZH Cable; 4CX16 Cu. XLPE FRLSZH Cable; 4CX25 Cu. XLPE FRLSZH Cable; 4CX35 Cu. XLPE FRLSZH Cable; 4CX185 Cu. XLPE FRLSZH Cable; 120mm2 Tinned copper wire; Grounding rod 20mmX3m; Grounding rod with Pit 20mmX3m; Earthing Bar; Cu earth strip 25X4 mm; 1.5m Air terminal; 4mm2 Cu./FRLSZH Cable; 6mm2 Cu./FRLSZH Cable; 10mm2 Cu./FRLSZH Cable; 16mm2 Cu./FRLSZH Cable; 95mm2 Cu./FRLSZH Cable; 120mm2 Cu./FRLSZH Cable; 30KVA, 400V, 3PH, 60Hz UPS |
| 1 | **Long Lead Time Items** | 2026-06-23 → 2026-09-28 (+97d) | 2026-07-20 → 2026-10-25 (+97d) |  |  |
| 2 | **Superstructure Works** | 2026-06-23 → 2026-09-28 (+97d) | 2026-07-20 → 2026-10-25 (+97d) |  |  |
| SL | **Sewage Pump Stations** | 2026-06-23 → 2026-09-28 (+97d) | 2026-07-06 → 2026-10-11 (+97d) |  |  |
| 1 | **Submission of Material** | 2026-06-23 → 2026-09-28 (+97d) | 2026-06-29 → 2026-10-04 (+97d) |  |  |
| ENG-MT-SPS-MC-S-100 | Material Submittal for Electromechanical Works for Pump Station | 2026-06-23 → 2026-09-28 (+97d) | 2026-06-29 → 2026-10-04 (+97d) | 2d → none |  |
| 2 | **Approval of Material** | 2026-06-30 → 2026-10-05 (+97d) | 2026-07-06 → 2026-10-11 (+97d) |  |  |
| ENG-MT-SPS-MC-A-110 | Material Approval for Electromechanical Works for Pump Station | 2026-06-30 → 2026-10-05 (+97d) | 2026-07-06 → 2026-10-11 (+97d) | 2d → none |  |
| SL1 | **Storage Tank (TSE)** | 2026-06-23 → 2026-09-28 (+97d) | 2026-07-20 → 2026-10-25 (+97d) |  |  |
| 1 | **Submission of Material** | 2026-06-23 → 2026-09-28 (+97d) | 2026-07-06 → 2026-10-11 (+97d) |  |  |
| ENG-MT-TSE-MC-S-110 | Material Submittal for Electromechanical Works for Storage Tank (TSE) | 2026-06-23 → 2026-09-28 (+97d) | 2026-07-06 → 2026-10-11 (+97d) | 3d → none |  |
| 2 | **Approval of Material** | 2026-07-07 → 2026-10-12 (+97d) | 2026-07-20 → 2026-10-25 (+97d) |  |  |
| ENG-MT-TSE-MC-A-120 | Material Approval for Electromechanical Works for Storage Tank (TSE) | 2026-07-07 → 2026-10-12 (+97d) | 2026-07-20 → 2026-10-25 (+97d) | 3d → none |  |
| PROC | **Procurement Cycle** |  | 2027-02-07 → 2027-05-23 (+105d) |  |  |
| NLL | **Short Lead Time Items** |  | 2026-12-26 → 2027-04-04 (+99d) |  |  |
| INF | **Infrastructure Networks** |  | 2026-12-26 → 2027-04-04 (+99d) |  |  |
| SD | **Storm Drainage Network** | 2026-06-23 → 2026-09-28 (+97d) | 2026-11-04 → 2027-02-08 (+96d) |  |  |
| PO | **Issuance of Purchase Orders** | 2026-06-23 → 2026-09-28 (+97d) | 2026-07-30 → 2026-11-04 (+97d) |  |  |
| 1 | **Main Line Sections** | 2026-06-23 → 2026-09-28 (+97d) | 2026-06-27 → 2026-10-01 (+96d) |  |  |
| PRO-SD-PO-100 | Issuance of Purchase Order for Manholes of Storm Drainage Network | 2026-06-23 → 2026-09-28 (+97d) | 2026-06-24 → 2026-09-29 (+97d) | 0d → none |  |
| PRO-SD-PO-110 | Issuance of Purchase Order for Main Line Pipes of Storm Drainage Network | 2026-06-25 → 2026-09-30 (+97d) | 2026-06-27 → 2026-10-01 (+96d) | 0d → none |  |
| 2 | **Catch Basin Sections** | 2026-06-28 → 2026-10-03 (+97d) | 2026-07-09 → 2026-10-14 (+97d) |  |  |
| PRO-SD-PO-130 | Issuance of Purchase Order for Catch Basins of Storm Drainage Network | 2026-06-28 → 2026-10-03 (+97d) | 2026-07-02 → 2026-10-07 (+97d) | 0d → none |  |
| PRO-SD-PO-150 | Issuance of Purchase Order for Catch Basin Pipes of Storm Drainage Network | 2026-07-04 → 2026-10-08 (+96d) | 2026-07-09 → 2026-10-14 (+97d) | 0d → none |  |
| 3 | **Testing and Finishes** | 2026-07-11 → 2026-10-15 (+96d) | 2026-07-23 → 2026-10-28 (+97d) |  |  |
| PRO-SD-PO-120 | Issuance of Purchase Order for Manhole Covers of Storm Drainage Network | 2026-07-11 → 2026-10-15 (+96d) | 2026-07-16 → 2026-10-21 (+97d) | 0d → none |  |
| PRO-SD-PO-140 | Issuance of Purchase Order for Catch Basin Covers of Storm Drainage Network | 2026-07-18 → 2026-10-22 (+96d) | 2026-07-23 → 2026-10-28 (+97d) | 0d → none |  |
| TE1 | **Storm Drainage Ponds** | 2026-07-25 → 2026-10-29 (+96d) | 2026-07-30 → 2026-11-04 (+97d) |  |  |
| PRO-DPO-CV-PO-10 | Issuance of Purchase Order for Materials of Storm Drainage Ponds | 2026-07-25 → 2026-10-29 (+96d) | 2026-07-30 → 2026-11-04 (+97d) | 0d → none |  |
| MF | **Manufacturing of Material** | 2026-06-25 → 2026-09-30 (+97d) | 2026-10-14 → 2027-01-18 (+96d) |  |  |
| 1 | **Main Line Sections** | 2026-06-25 → 2026-09-30 (+97d) | 2026-07-25 → 2026-10-29 (+96d) |  |  |
| PRO-SD-MF-100 | Manufacturing of Materials for Manholes of Storm Drainage Network | 2026-06-25 → 2026-09-30 (+97d) | 2026-07-04 → 2026-10-08 (+96d) | 4d → none |  |
| PRO-SD-MF-110 | Manufacturing of Materials for Main Line Pipes of Storm Drainage Network | 2026-06-28 → 2026-10-03 (+97d) | 2026-07-25 → 2026-10-29 (+96d) | 0d → none |  |
| 2 | **Catch Basin Sections** | 2026-07-04 → 2026-10-08 (+96d) | 2026-08-08 → 2026-11-12 (+96d) |  |  |
| PRO-SD-MF-130 | Manufacturing of Materials for Catch Basins of Storm Drainage Network | 2026-07-04 → 2026-10-08 (+96d) | 2026-08-01 → 2026-11-05 (+96d) | 18d → none |  |
| PRO-SD-MF-150 | Manufacturing of Materials for Catch Basin Pipes of Storm Drainage Network | 2026-07-11 → 2026-10-15 (+96d) | 2026-08-08 → 2026-11-12 (+96d) | 3d → none |  |
| 3 | **Testing and Finishes** | 2026-08-09 → 2026-11-14 (+97d) | 2026-10-06 → 2027-01-10 (+96d) |  |  |
| PRO-SD-MF-120 | Manufacturing of Materials for Manhole Covers of Storm Drainage Network | 2026-08-09 → 2026-11-14 (+97d) | 2026-08-31 → 2026-12-06 (+97d) | 3d → none |  |
| PRO-SD-MF-140 | Manufacturing of Materials for Catch Basin Covers of Storm Drainage Network | 2026-09-01 → 2026-12-07 (+97d) | 2026-10-06 → 2027-01-10 (+96d) | 3d → none |  |
| TE | **Storm Drainage Ponds** | 2026-08-01 → 2026-11-05 (+96d) | 2026-10-14 → 2027-01-18 (+96d) |  |  |
| PRO-DPO-CV-MF-10 | Manufacturing of Materials of Storm Drainage Ponds | 2026-08-01 → 2026-11-05 (+96d) | 2026-10-14 → 2027-01-18 (+96d) | 0d → none |  |
| 1DL | **1st Material Delivery & Site Inspection** | 2026-07-05 → 2026-10-10 (+97d) | 2026-10-19 → 2027-01-23 (+96d) |  |  |
| 1 | **Main Line Sections** | 2026-07-05 → 2026-10-10 (+97d) | 2026-07-29 → 2026-11-03 (+97d) |  |  |
| PRO-SD-1DL-100 | 1ST Material Delivery for Manholes of Storm Drainage Network | 2026-07-05 → 2026-10-10 (+97d) | 2026-07-08 → 2026-10-13 (+97d) | 4d → none |  |
| PRO-SD-1DL-110 | 1ST Material Delivery for Main Line Pipes of Storm Drainage Network | 2026-07-26 → 2026-10-31 (+97d) | 2026-07-29 → 2026-11-03 (+97d) | 0d → none |  |
| 2 | **Catch Basin Sections** | 2026-08-02 → 2026-11-07 (+97d) | 2026-08-12 → 2026-11-17 (+97d) |  |  |

| ID | Task | Start | Finish | Total float |
| --- | --- | --- | --- | --- |
| PRO-SD-1DL-130 | 1ST Material Delivery for Catch Basins of Storm Drainage Network | 2026-08-02 → 2026-11-07 (+97d) | 2026-08-05 → 2026-11-10 (+97d) | 18d → none |
| PRO-SD-1DL-120 | 1ST Material Delivery for Catch Basin Pipes of Storm Drainage Network | 2026-08-09 → 2026-11-14 (+97d) | 2026-08-12 → 2026-11-17 (+97d) | 20d → none |
| 3 | **Testing and Finishes** | 2026-09-01 → 2026-12-07 (+97d) | 2026-10-11 → 2027-01-14 (+95d) |  |
| PRO-SD-1DL-140 | 1ST Material Delivery for Manholes Covers of Storm Drainage Network | 2026-09-01 → 2026-12-07 (+97d) | 2026-09-05 → 2026-12-10 (+96d) | 7d → none |
| PRO-SD-1DL-150 | 1ST Material Delivery for Catch Basin Covers of Storm Drainage Network | 2026-10-07 → 2027-01-11 (+96d) | 2026-10-11 → 2027-01-14 (+95d) | 3d → none |
| TE2 | **Storm Drainage Ponds** | 2026-10-15 → 2027-01-19 (+96d) | 2026-10-19 → 2027-01-23 (+96d) |  |
| PRO-DPO-CV-1DL-10 | 1ST Material Delivery for Materials of Drainage Ponds | 2026-10-15 → 2027-01-19 (+96d) | 2026-10-19 → 2027-01-23 (+96d) | 0d → none |
| DL | **Material Delivery & Site Inspection** | 2026-07-09 → 2026-10-14 (+97d) | 2026-11-04 → 2027-02-08 (+96d) |  |
| 1 | **Main Line Sections** | 2026-07-09 → 2026-10-14 (+97d) | 2026-08-16 → 2026-11-21 (+97d) |  |
| PRO-R25-SD-DL-100 | Material Delivery & Site Inspection of Manholes of Storm Drainage Network | 2026-07-09 → 2026-10-14 (+97d) | 2026-07-20 → 2026-10-25 (+97d) | 4d → none |
| PRO-R25-SD-DL-120 | Material Delivery & Site Inspection of Main Line Pipes of Storm Drainage Network | 2026-07-30 → 2026-11-04 (+97d) | 2026-08-16 → 2026-11-21 (+97d) | 0d → none |
| 2 | **Catch Basin Sections** | 2026-08-06 → 2026-11-11 (+97d) | 2026-08-23 → 2026-11-28 (+97d) |  |
| PRO-R25-SD-DL-130 | Material Delivery & Site Inspection of Catch Basins for Storm Drainage Network | 2026-08-06 → 2026-11-11 (+97d) | 2026-08-15 → 2026-11-19 (+96d) | 18d → none |
| PRO-R25-SD-DL-110 | Material Delivery & Site Inspection of Catch Basin Pipes for Storm Drainage Network | 2026-08-16 → 2026-11-21 (+97d) | 2026-08-23 → 2026-11-28 (+97d) | 18d → none |
| 3 | **Testing and Finishes** | 2026-09-06 → 2026-12-12 (+97d) | 2026-10-27 → 2027-01-31 (+96d) |  |
| PRO-R25-SD-DL-140 | Material Delivery & Site Inspection of Manholes Covers for Storm Drainage Network | 2026-09-06 → 2026-12-12 (+97d) | 2026-09-29 → 2027-01-03 (+96d) | 7d → none |
| PRO-R25-SD-DL-150 | Material Delivery & Site Inspection of Catch Basin Covers for Storm Drainage Network | 2026-10-12 → 2027-01-16 (+96d) | 2026-10-27 → 2027-01-31 (+96d) | 7d → none |
| TE3 | **Storm Drainage Ponds** | 2026-10-20 → 2027-01-24 (+96d) | 2026-11-04 → 2027-02-08 (+96d) |  |
| PRO-DPO-CV-DL-10 | Material Delivery & Site Inspection for Materials of Storm Drainage Ponds | 2026-10-20 → 2027-01-24 (+96d) | 2026-11-04 → 2027-02-08 (+96d) | 0d → none |
| SW | **Sewage Network** | 2026-06-23 → 2026-09-28 (+97d) | 2026-08-09 → 2026-11-14 (+97d) |  |
| PO | **Issuance of Purchase Orders** | 2026-06-23 → 2026-09-28 (+97d) | 2026-07-16 → 2026-10-21 (+97d) |  |
| 1 | **Main Line Sections** | 2026-06-23 → 2026-09-28 (+97d) | 2026-07-08 → 2026-10-13 (+97d) |  |
| PRO-SW-PO-100 | Issuance of Purchase Order for Main Line Pipes of Sewage Network | 2026-06-23 → 2026-09-28 (+97d) | 2026-06-30 → 2026-10-05 (+97d) | 8d → none |
| PRO-SW-PO-110 | Issuance of Purchase Order for Manhole of Sewage Network | 2026-07-01 → 2026-10-06 (+97d) | 2026-07-08 → 2026-10-13 (+97d) | 8d → none |
| 3 | **Testing and Finishes** | 2026-07-09 → 2026-10-14 (+97d) | 2026-07-16 → 2026-10-21 (+97d) |  |
| PRO-SW-PO-120 | Issuance of Purchase Order for Manhole Covers of Sewage Network | 2026-07-09 → 2026-10-14 (+97d) | 2026-07-16 → 2026-10-21 (+97d) | 8d → none |
| MF | **Manufacturing of Material** | 2026-07-01 → 2026-10-06 (+97d) | 2026-07-23 → 2026-10-28 (+97d) |  |
| 1 | **Main Line Sections** | 2026-07-01 → 2026-10-06 (+97d) | 2026-07-20 → 2026-10-25 (+97d) |  |
| PRO-SW-MF-100 | Manufacturing of Main Line Pipes for Sewage Network | 2026-07-01 → 2026-10-06 (+97d) | 2026-07-12 → 2026-10-17 (+97d) | 34d → none |
| PRO-SW-MF-110 | Manufacturing of Manholes for Sewage Network | 2026-07-09 → 2026-10-14 (+97d) | 2026-07-20 → 2026-10-25 (+97d) | 31d → none |
| 3 | **Testing and Finishes** | 2026-07-18 → 2026-10-22 (+96d) | 2026-07-23 → 2026-10-28 (+97d) |  |
| PRO-SW-MF-120 | Manufacturing of Manhole Covers for Sewage Network | 2026-07-18 → 2026-10-22 (+96d) | 2026-07-23 → 2026-10-28 (+97d) | 28d → none |
| 1DL | **1st Material Delivery & Site Inspection** | 2026-07-13 → 2026-10-18 (+97d) | 2026-07-30 → 2026-11-04 (+97d) |  |
| 1 | **Main Line Sections** | 2026-07-13 → 2026-10-18 (+97d) | 2026-07-28 → 2026-11-02 (+97d) |  |
| PRO-SW-1DL-100 | 1ST Material Delivery for Main Line Pipes of Sewage Network | 2026-07-13 → 2026-10-18 (+97d) | 2026-07-16 → 2026-10-21 (+97d) | 34d → none |
| PRO-SW-1DL-110 | 1ST Material Delivery for Manholes of Sewage Network | 2026-07-25 → 2026-10-29 (+96d) | 2026-07-28 → 2026-11-02 (+97d) | 28d → none |
| 3 | **Testing and Finishes** | 2026-07-29 → 2026-11-03 (+97d) | 2026-07-30 → 2026-11-04 (+97d) |  |
| PRO-SW-1DL-120 | 1ST Material Delivery for Manholes Covers of Sewage Network | 2026-07-29 → 2026-11-03 (+97d) | 2026-07-30 → 2026-11-04 (+97d) | 30d → none |
| DL | **Material Delivery & Site Inspection** | 2026-07-29 → 2026-11-03 (+97d) | 2026-08-09 → 2026-11-14 (+97d) |  |
| 1 | **Main Line Sections** | 2026-07-29 → 2026-11-03 (+97d) | 2026-08-09 → 2026-11-14 (+97d) |  |
| PRO-R25-SW-DL-110 | Material Delivery & Site Inspection of Manholes for Sewage Network | 2026-07-29 → 2026-11-03 (+97d) | 2026-08-02 → 2026-11-07 (+97d) | 28d → none |
| PRO-R25-SW-DL-100 | Material Delivery & Site Inspection of Main Line Pipes for Sewage Network | 2026-08-05 → 2026-11-10 (+97d) | 2026-08-09 → 2026-11-14 (+97d) | 30d → none |
| 3 | **Testing and Finishes** | 2026-08-01 → 2026-11-05 (+96d) | 2026-08-04 → 2026-11-09 (+97d) |  |
| PRO-R25-SW-DL-120 | Material Delivery & Site Inspection of Manholes Covers for Sewage Network | 2026-08-01 → 2026-11-05 (+96d) | 2026-08-04 → 2026-11-09 (+97d) | 30d → none |
| TSE | **Treated Sewage Effluent (Tse)** | 2026-06-23 → 2026-09-28 (+97d) | 2026-08-22 → 2026-11-26 (+96d) |  |
| PO | **Issuance of Purchase Orders** | 2026-06-23 → 2026-09-28 (+97d) | 2026-06-30 → 2026-10-05 (+97d) |  |
| PRO-TSE-PO-120 | Issuance of Purchase Order for Materials of Treated Sewage Effluent (Tse) | 2026-06-23 → 2026-09-28 (+97d) | 2026-06-30 → 2026-10-05 (+97d) | 18d → none |
| MF | **Manufacturing of Material** | 2026-07-01 → 2026-10-06 (+97d) | 2026-07-28 → 2026-11-02 (+97d) |  |
| PRO-TSE-MF-120 | Manufacturing of Materials for Treated Sewage Effluent (Tse) | 2026-07-01 → 2026-10-06 (+97d) | 2026-07-28 → 2026-11-02 (+97d) | 18d → none |
| 1DL | **1st Material Delivery & Site Inspection** | 2026-07-29 → 2026-11-03 (+97d) | 2026-08-05 → 2026-11-10 (+97d) |  |
| PRO-TSE-1DL-120 | 1ST Material Delivery for Materials of Treated Sewage Effluent (Tse) | 2026-07-29 → 2026-11-03 (+97d) | 2026-08-05 → 2026-11-10 (+97d) | 18d → none |
| DL | **Material Delivery & Site Inspection** | 2026-08-06 → 2026-11-11 (+97d) | 2026-08-22 → 2026-11-26 (+96d) |  |
| PRO-R25-TSE-DL-120 | Material Delivery & Site Inspection of Materials for Treated Sewage Effluent (Tse) | 2026-08-06 → 2026-11-11 (+97d) | 2026-08-22 → 2026-11-26 (+96d) | 18d → none |
| PW | **Potable Water Network** |  | 2026-11-26 → 2027-03-02 (+96d) |  |
| PO | **Issuance of Purchase Orders** |  | 2026-07-05 → 2026-10-10 (+97d) |  |
| 3 | **Fire Hydrant** | 2026-06-23 → 2026-09-28 (+97d) | 2026-06-28 → 2026-10-03 (+97d) |  |
| PRO-PW-PO-120 | Issuance of Purchase Order for Fire Hydrants of Potable Water Network | 2026-06-23 → 2026-09-28 (+97d) | 2026-06-28 → 2026-10-03 (+97d) | 8d → none |
| 4 | **Testing and Finishes** | 2026-06-29 → 2026-10-04 (+97d) | 2026-07-05 → 2026-10-10 (+97d) |  |
| PRO-PW-PO-130 | Issuance of Purchase Order for Surface Box of Potable Water Network | 2026-06-29 → 2026-10-04 (+97d) | 2026-07-05 → 2026-10-10 (+97d) | 8d → none |
| MF | **Manufacturing of Material** | 2026-06-23 → 2026-09-28 (+97d) | 2026-09-15 → 2026-12-21 (+97d) |  |
| 1 | **Main Line Sections** | 2026-06-23 → 2026-09-28 (+97d) | 2026-08-29 → 2026-12-03 (+96d) |  |
| PRO-PW-MF-100 | Manufacturing of Main Line Pipes and Materials for Potable Water Network | 2026-06-23 → 2026-09-28 (+97d) | 2026-08-01 → 2026-11-05 (+96d) | 25d → none |
| PRO-PW-MF-110 | Manufacturing of Valves for Potable Water Network | 2026-08-02 → 2026-11-07 (+97d) | 2026-08-29 → 2026-12-03 (+96d) | 25d → none |
| 3 | **Fire Hydrant** | 2026-08-30 → 2026-12-05 (+97d) | 2026-09-15 → 2026-12-21 (+97d) |  |
| PRO-PW-MF-120 | Manufacturing of Fire Hydrants for Potable Water Network | 2026-08-30 → 2026-12-05 (+97d) | 2026-09-15 → 2026-12-21 (+97d) | 25d → none |
| 4 | **Testing and Finishes** | 2026-07-06 → 2026-10-11 (+97d) | 2026-09-01 → 2026-12-07 (+97d) |  |
| PRO-PW-MF-130 | Manufacturing for Surface Box of Potable Water Network | 2026-07-06 → 2026-10-11 (+97d) | 2026-09-01 → 2026-12-07 (+97d) | 8d → none |
| 1DL | **1st Material Delivery & Site Inspection** | 2026-09-02 → 2026-12-08 (+97d) | 2026-09-24 → 2026-12-29 (+96d) |  |
| 1 | **Main Line Sections** | 2026-09-02 → 2026-12-08 (+97d) | 2026-09-17 → 2026-12-23 (+97d) |  |
| PRO-PW-1DL-100 | 1ST Material Delivery for Main Line Pipes and Materials of Potable Water Network | 2026-09-02 → 2026-12-08 (+97d) | 2026-09-09 → 2026-12-15 (+97d) | 8d → none |

| ID | Task | Start | Finish | Total float |
| --- | --- | --- | --- | --- |
| PRO-PW-1DL-110 | 1ST Material Delivery for Valves of Potable Water Network | 2026-09-10 → 2026-12-16 (+97d) | 2026-09-17 → 2026-12-23 (+97d) | 22d → none |
| 3 | **Fire Hydrant** | 2026-09-16 → 2026-12-22 (+97d) | 2026-09-24 → 2026-12-29 (+96d) |  |
| PRO-PW-1DL-120 | 1ST Material Delivery for Fire Hydrants of Potable Water Network | 2026-09-16 → 2026-12-22 (+97d) | 2026-09-24 → 2026-12-29 (+96d) | 25d → none |
| 4 | **Testing and Finishes** | 2026-09-02 → 2026-12-08 (+97d) | 2026-09-09 → 2026-12-15 (+97d) |  |
| PRO-PW-1DL-130 | 1ST Material Delivery for Finishes of Potable Water Network | 2026-09-02 → 2026-12-08 (+97d) | 2026-09-09 → 2026-12-15 (+97d) | 36d → none |
| DL | **Material Delivery & Site Inspection** | 2026-09-10 → 2026-12-16 (+97d) | 2026-11-26 → 2027-03-02 (+96d) |  |
| 1 | **Main Line Sections** | 2026-09-10 → 2026-12-16 (+97d) | 2026-10-29 → 2027-02-02 (+96d) |  |
| PRO-R25-PW-DL-100 | Material Delivery & Site Inspection of Main Line Pipes and Materials for Potable Water Network | 2026-09-10 → 2026-12-16 (+97d) | 2026-10-05 → 2027-01-09 (+96d) | 8d → none |
| PRO-R25-PW-DL-110 | Material Delivery & Site Inspection of Valves for Potable Water Network | 2026-10-06 → 2027-01-10 (+96d) | 2026-10-29 → 2027-02-02 (+96d) | 8d → none |
| 3 | **Fire Hydrant** | 2026-09-26 → 2026-12-30 (+95d) | 2026-10-01 → 2027-01-05 (+96d) |  |
| PRO-R25-PW-DL-120 | Material Delivery & Site Inspection of Fire Hydrants for Potable Water Network | 2026-09-26 → 2026-12-30 (+95d) | 2026-10-01 → 2027-01-05 (+96d) | 29d → none |
| 4 | **Testing and Finishes** | 2026-09-10 → 2026-12-16 (+97d) | 2026-11-26 → 2027-03-02 (+96d) |  |
| PRO-R25-PW-DL-130 | Material Delivery & Site Inspection for Finishes of Potable Water Network | 2026-09-10 → 2026-12-16 (+97d) | 2026-11-26 → 2027-03-02 (+96d) | 36d → none |
| IR | **Irrigation Network** | 2026-07-06 → 2026-10-11 (+97d) | 2026-10-01 → 2027-01-05 (+96d) |  |
| PO | **Issuance of Purchase Orders** | 2026-07-06 → 2026-10-11 (+97d) | 2026-07-15 → 2026-10-20 (+97d) |  |
| 1 | **Main Line Pipes** | 2026-07-06 → 2026-10-11 (+97d) | 2026-07-15 → 2026-10-20 (+97d) |  |
| PRO-IR-PO-100 | Issuance of Purchase Order for Main Line Pipes of Irrigation Network | 2026-07-06 → 2026-10-11 (+97d) | 2026-07-11 → 2026-10-15 (+96d) | 9d → none |
| PRO-IR-PO-110 | Issuance of Purchase Order for Valves of Irrigation Network | 2026-07-12 → 2026-10-17 (+97d) | 2026-07-15 → 2026-10-20 (+97d) | 9d → none |
| MF | **Manufacturing of Material** | 2026-07-12 → 2026-10-17 (+97d) | 2026-08-29 → 2026-12-03 (+96d) |  |
| 1 | **Main Line Pipes** | 2026-07-12 → 2026-10-17 (+97d) | 2026-08-29 → 2026-12-03 (+96d) |  |
| PRO-IR-MF-100 | Manufacturing of Main Line Pipes for Irrigation Network | 2026-07-12 → 2026-10-17 (+97d) | 2026-08-04 → 2026-11-09 (+97d) | 30d → none |
| PRO-IR-MF-110 | Manufacturing of Valves for Irrigation Network | 2026-08-05 → 2026-11-10 (+97d) | 2026-08-29 → 2026-12-03 (+96d) | 30d → none |
| 1DL | **1st Material Delivery & Site Inspection** | 2026-08-05 → 2026-11-10 (+97d) | 2026-09-06 → 2026-12-12 (+97d) |  |
| 1 | **Main Line Pipes** | 2026-08-05 → 2026-11-10 (+97d) | 2026-09-06 → 2026-12-12 (+97d) |  |
| PRO-IR-1DL-100 | 1ST Material Delivery for Main Line Pipes of Irrigation Network | 2026-08-05 → 2026-11-10 (+97d) | 2026-08-12 → 2026-11-17 (+97d) | 30d → none |
| PRO-IR-1DL-110 | 1ST Material Delivery for Valves of Irrigation Network | 2026-08-30 → 2026-12-05 (+97d) | 2026-09-06 → 2026-12-12 (+97d) | 30d → none |
| DL | **Material Delivery & Site Inspection** | 2026-08-13 → 2026-11-18 (+97d) | 2026-10-01 → 2027-01-05 (+96d) |  |
| 1 | **Main Line Pipes** | 2026-08-13 → 2026-11-18 (+97d) | 2026-10-01 → 2027-01-05 (+96d) |  |
| PRO-R25-IR-DL-100 | Material Delivery & Site Inspection of Main Line Pipes for Irrigation Network | 2026-08-13 → 2026-11-18 (+97d) | 2026-09-06 → 2026-12-12 (+97d) | 30d → none |
| PRO-R25-IR-DL-110 | Material Delivery & Site Inspection of Valves for Irrigation Network | 2026-09-07 → 2026-12-13 (+97d) | 2026-10-01 → 2027-01-05 (+96d) | 30d → none |
| MV | **Medium Voltage Network** | 2026-07-16 → 2026-10-21 (+97d) | 2026-10-01 → 2027-01-05 (+96d) |  |
| PO | **Issuance of Purchase Orders** | 2026-07-16 → 2026-10-21 (+97d) | 2026-07-22 → 2026-10-27 (+97d) |  |
| PRO-MV-PO-100 | Issuance of Purchase Order for Medium Voltage Materials of Medium Voltage Network | 2026-07-16 → 2026-10-21 (+97d) | 2026-07-22 → 2026-10-27 (+97d) | 9d → none |
| MF | **Manufacturing of Material** | 2026-07-23 → 2026-10-28 (+97d) | 2026-08-16 → 2026-11-21 (+97d) |  |
| PRO-MV-MF-100 | Manufacturing of Medium Voltage Materials for Medium Voltage Network | 2026-07-23 → 2026-10-28 (+97d) | 2026-08-16 → 2026-11-21 (+97d) | 13d → none |
| 1DL | **1st Material Delivery & Site Inspection** | 2026-08-17 → 2026-11-22 (+97d) | 2026-08-24 → 2026-11-29 (+97d) |  |
| PRO-MV-1DL-100 | 1ST Material Delivery for Medium Voltage Materials of Medium Voltage Network | 2026-08-17 → 2026-11-22 (+97d) | 2026-08-24 → 2026-11-29 (+97d) | 13d → none |
| DL | **Material Delivery & Site Inspection** | 2026-09-07 → 2026-12-13 (+97d) | 2026-10-01 → 2027-01-05 (+96d) |  |
| PRO-MV-DL-100 | Material Delivery & Site Inspection of Medium Voltage Materials for Medium Voltage Network | 2026-09-07 → 2026-12-13 (+97d) | 2026-10-01 → 2027-01-05 (+96d) | 31d → none |
| LV | **Low Voltage Network** | 2026-06-23 → 2026-09-28 (+97d) | 2026-11-29 → 2027-03-04 (+95d) |  |
| PO | **Issuance of Purchase Orders** | 2026-06-23 → 2026-09-28 (+97d) | 2026-07-25 → 2026-10-29 (+96d) |  |
| 1 | **Main Low Voltage Cables Works** | 2026-06-23 → 2026-09-28 (+97d) | 2026-06-30 → 2026-10-05 (+97d) |  |
| PRO-LV-ML-PO-100 | Issuance of Purchase Order for Main Low Voltage Cables of Low Voltage Network | 2026-06-23 → 2026-09-28 (+97d) | 2026-06-30 → 2026-10-05 (+97d) | 2d → none |
| 2 | **Service Low Voltage Cables Works** | 2026-06-23 → 2026-09-28 (+97d) | 2026-06-30 → 2026-10-05 (+97d) |  |
| PRO-LV-HC-PO-100 | Issuance of Purchase Order for Service Low Voltage Cables of Low Voltage Network | 2026-06-23 → 2026-09-28 (+97d) | 2026-06-30 → 2026-10-05 (+97d) | 0d → none |
| 3 | **Distribution Pillar Works** | 2026-07-01 → 2026-10-06 (+97d) | 2026-07-16 → 2026-10-21 (+97d) |  |
| PRO-LV-DP-PO-100 | Issuance of Purchase Order for Distribution Pillars of Low Voltage Network | 2026-07-01 → 2026-10-06 (+97d) | 2026-07-08 → 2026-10-13 (+97d) | 0d → none |
| PRO-LV-DP-PO-110 | Issuance of Purchase Order for Low Voltage Earthing of Low Voltage Network | 2026-07-09 → 2026-10-14 (+97d) | 2026-07-16 → 2026-10-21 (+97d) | 0d → none |
| 4 | **Termination and Testing Works** | 2026-07-18 → 2026-10-22 (+96d) | 2026-07-25 → 2026-10-29 (+96d) |  |
| PRO-LV-TT-PO-100 | Issuance of Purchase Order for Cable Lugs of Low Voltage Network | 2026-07-18 → 2026-10-22 (+96d) | 2026-07-25 → 2026-10-29 (+96d) | 3d → none |
| MF | **Manufacturing of Material** | 2026-07-01 → 2026-10-06 (+97d) | 2026-10-15 → 2027-01-19 (+96d) |  |
| 1 | **Main Low Voltage Cables Works** | 2026-07-01 → 2026-10-06 (+97d) | 2026-08-04 → 2026-11-09 (+97d) |  |
| PRO-LV-ML-MF-100 | Manufacturing of Main Low Voltage Cables for Low Voltage Network | 2026-07-01 → 2026-10-06 (+97d) | 2026-08-04 → 2026-11-09 (+97d) | 2d → none |
| 2 | **Service Low Voltage Cables Works** | 2026-07-01 → 2026-10-06 (+97d) | 2026-08-04 → 2026-11-09 (+97d) |  |
| PRO-LV-HC-MF-100 | Manufacturing of Service Low Voltage Cables for Low Voltage Network | 2026-07-01 → 2026-10-06 (+97d) | 2026-08-04 → 2026-11-09 (+97d) | 24d → none |
| 3 | **Distribution Pillar Works** | 2026-07-09 → 2026-10-14 (+97d) | 2026-09-01 → 2026-12-07 (+97d) |  |
| PRO-LV-DP-MF-100 | Manufacturing of Distribution Pillars for Low Voltage Network | 2026-07-09 → 2026-10-14 (+97d) | 2026-08-24 → 2026-11-29 (+97d) | 17d → none |
| PRO-LV-DP-MF-110 | Manufacturing of Low Voltage Earthing for Low Voltage Network | 2026-07-18 → 2026-10-22 (+96d) | 2026-09-01 → 2026-12-07 (+97d) | 10d → none |
| 4 | **Termination and Testing Works** | 2026-07-26 → 2026-10-31 (+97d) | 2026-10-15 → 2027-01-19 (+96d) |  |
| PRO-LV-TT-MF-100 | Manufacturing of Cable Lugs for Low Voltage Network | 2026-07-26 → 2026-10-31 (+97d) | 2026-10-15 → 2027-01-19 (+96d) | 3d → none |
| 1DL | **1st Delivery of Material to Site** | 2026-08-05 → 2026-11-10 (+97d) | 2026-10-17 → 2027-01-20 (+95d) |  |
| 1 | **Main Low Voltage Cables Works** | 2026-08-05 → 2026-11-10 (+97d) | 2026-09-13 → 2026-12-19 (+97d) |  |
| PRO-LV-ML-1DL-100 | 1ST Material Delivery for Main Low Voltage Cables of Low Voltage Network | 2026-08-05 → 2026-11-10 (+97d) | 2026-09-13 → 2026-12-19 (+97d) | 2d → none |
| 2 | **Service Low Voltage Cables Works** | 2026-09-14 → 2026-12-20 (+97d) | 2026-09-21 → 2026-12-27 (+97d) |  |
| PRO-LV-HC-1DL-100 | 1ST Material Delivery for Service Low Voltage Cables of Low Voltage Network | 2026-09-14 → 2026-12-20 (+97d) | 2026-09-21 → 2026-12-27 (+97d) | 2d → none |
| 3 | **Distribution Pillar Works** | 2026-09-22 → 2026-12-28 (+97d) | 2026-10-08 → 2027-01-12 (+96d) |  |
| PRO-LV-DP-1DL-100 | 1ST Material Delivery for Distribution Pillars of Low Voltage Network | 2026-09-22 → 2026-12-28 (+97d) | 2026-09-30 → 2027-01-04 (+96d) | 2d → none |
| PRO-LV-DP-1DL-110 | 1ST Material Delivery for Low Voltage Earthing of Low Voltage Network | 2026-10-01 → 2027-01-05 (+96d) | 2026-10-08 → 2027-01-12 (+96d) | 2d → none |
| 4 | **Termination and Testing Works** | 2026-10-10 → 2027-01-13 (+95d) | 2026-10-17 → 2027-01-20 (+95d) |  |
| PRO-LV-TT-1DL-100 | 1ST Material Delivery for Cable Lugs of Low Voltage Network | 2026-10-10 → 2027-01-13 (+95d) | 2026-10-17 → 2027-01-20 (+95d) | 2d → none |

| ID | Task | Start | Finish | Total float |
| --- | --- | --- | --- | --- |
| DL | **Delivery of Material to Site** | 2026-09-14 → 2026-12-20 (+97d) | 2026-11-29 → 2027-03-04 (+95d) |  |
| 1 | **Main Low Voltage Cables Works** | 2026-09-14 → 2026-12-20 (+97d) | 2026-09-21 → 2026-12-27 (+97d) |  |
| PRO-LV-ML-DL-100 | Material Delivery of Main Low Voltage Cables for Low Voltage Network | 2026-09-14 → 2026-12-20 (+97d) | 2026-09-21 → 2026-12-27 (+97d) | 10d → none |
| 2 | **Service Low Voltage Cables Works** | 2026-09-22 → 2026-12-28 (+97d) | 2026-10-17 → 2027-01-20 (+95d) |  |
| PRO-LV-HC-DL-100 | Material Delivery of Service Low Voltage Cables for Low Voltage Network | 2026-09-22 → 2026-12-28 (+97d) | 2026-10-17 → 2027-01-20 (+95d) | 10d → none |
| 3 | **Distribution Pillar Works** | 2026-10-17 → 2027-01-20 (+95d) | 2026-11-08 → 2027-02-11 (+95d) |  |
| PRO-LV-DP-DL-120 | Material Delivery of Low Voltage Earthing for Low Voltage Network | 2026-10-17 → 2027-01-20 (+95d) | 2026-11-08 → 2027-02-11 (+95d) | 10d → none |
| PRO-LV-DP-DL-100 | Material Delivery of Distribution Pillars for Low Voltage Network | 2026-10-18 → 2027-01-21 (+95d) | 2026-11-08 → 2027-02-11 (+95d) | 10d → none |
| 4 | **Termination and Testing Works** | 2026-11-09 → 2027-02-13 (+96d) | 2026-11-29 → 2027-03-04 (+95d) |  |
| PRO-LV-TT-DL-100 | Material Delivery of Cable Lugs for Low Voltage Network | 2026-11-09 → 2027-02-13 (+96d) | 2026-11-29 → 2027-03-04 (+95d) | 33d → none |
| SL | **Street Lighting Network** | 2026-07-18 → 2026-10-22 (+96d) | 2026-12-16 → 2027-03-25 (+99d) |  |
| PO | **Issuance of Purchase Orders** | 2026-07-18 → 2026-10-22 (+96d) | 2026-08-05 → 2026-11-10 (+97d) |  |
| 1 | **Cabling Works** | 2026-07-18 → 2026-10-22 (+96d) | 2026-07-22 → 2026-10-27 (+97d) |  |
| PRO-SL-PO-100 | Issuance of Purchase Order for Lighting Cables of Street Lighting Network | 2026-07-18 → 2026-10-22 (+96d) | 2026-07-22 → 2026-10-27 (+97d) | 8d → none |
| 2 | **Lighting Poles Works** | 2026-07-18 → 2026-10-22 (+96d) | 2026-07-22 → 2026-10-27 (+97d) |  |
| PRO-SL-PO-110 | Issuance of Purchase Order for Lighting Poles Foundations of Street Lighting Network | 2026-07-18 → 2026-10-22 (+96d) | 2026-07-22 → 2026-10-27 (+97d) | 12d → none |
| PRO-SL-PO-120 | Issuance of Purchase Order for Lighting Poles of Street Lighting Network | 2026-07-18 → 2026-10-22 (+96d) | 2026-07-22 → 2026-10-27 (+97d) | 12d → none |
| PRO-SL-PO-140 | Issuance of Purchase Order for Lighting Fixtures of Street Lighting Network | 2026-07-18 → 2026-10-22 (+96d) | 2026-07-22 → 2026-10-27 (+97d) | 12d → none |
| 3 | **Distribution Panel Board** | 2026-07-18 → 2026-10-22 (+96d) | 2026-07-23 → 2026-10-28 (+97d) |  |
| PRO-SL-PO-160 | Issuance of Purchase Order for Distrubution Panel Boards of Street Lighting Network | 2026-07-18 → 2026-10-22 (+96d) | 2026-07-23 → 2026-10-28 (+97d) | 28d → none |
| 4 | **Earthing System Works** | 2026-07-30 → 2026-11-04 (+97d) | 2026-08-05 → 2026-11-10 (+97d) |  |
| PRO-SL-PO-150 | Issuance of Purchase Order for Lighting Earthing of Street Lighting Network | 2026-07-30 → 2026-11-04 (+97d) | 2026-08-05 → 2026-11-10 (+97d) | 12d → none |
| 5 | **Termination and Testing Works** | 2026-07-23 → 2026-10-28 (+97d) | 2026-07-30 → 2026-11-04 (+97d) |  |
| PRO-SL-PO-170 | Issuance of Purchase Order for Cable Lugs of Street Lighting Network | 2026-07-23 → 2026-10-28 (+97d) | 2026-07-29 → 2026-11-03 (+97d) | 12d → none |
| PRO-SL-PO-130 | Issuance of Purchase Order for Fuse Boxes of Street Lighting Network | 2026-07-25 → 2026-10-29 (+96d) | 2026-07-30 → 2026-11-04 (+97d) | 28d → none |
| MF | **Manufacturing of Material** | 2026-07-23 → 2026-10-28 (+97d) | 2026-11-15 → 2027-02-18 (+95d) |  |
| 1 | **Cabling Works** | 2026-07-23 → 2026-10-28 (+97d) | 2026-08-15 → 2026-11-19 (+96d) |  |
| PRO-SL-MF-100 | Manufacturing of Lighting Cables for Street Lighting Network | 2026-07-23 → 2026-10-28 (+97d) | 2026-08-15 → 2026-11-19 (+96d) | 8d → none |
| 2 | **Lighting Poles Works** | 2026-08-16 → 2026-11-21 (+97d) | 2026-09-08 → 2026-12-14 (+97d) |  |
| PRO-SL-MF-110 | Manufacturing of Lighting Poles Foundations for Street Lighting Network | 2026-08-16 → 2026-11-21 (+97d) | 2026-09-08 → 2026-12-14 (+97d) | 8d → none |
| PRO-SL-MF-120 | Manufacturing of Lighting Poles for Street Lighting Network | 2026-08-16 → 2026-11-21 (+97d) | 2026-09-08 → 2026-12-14 (+97d) | 14d → none |
| PRO-SL-MF-140 | Manufacturing of Lighting Fixtures for Street Lighting Network | 2026-08-16 → 2026-11-21 (+97d) | 2026-09-08 → 2026-12-14 (+97d) | 14d → none |
| 3 | **Distribution Panel Board** | 2026-09-09 → 2026-12-15 (+97d) | 2026-10-14 → 2027-01-18 (+96d) |  |
| PRO-SL-MF-160 | Manufacturing of Distrubution Panel Boards for Street Lighting Network | 2026-09-09 → 2026-12-15 (+97d) | 2026-10-14 → 2027-01-18 (+96d) | 14d → none |
| 4 | **Earthing System Works** | 2026-08-06 → 2026-11-11 (+97d) | 2026-09-21 → 2026-12-27 (+97d) |  |
| PRO-SL-MF-150 | Manufacturing of Lighting Earthing for Street Lighting Network | 2026-08-06 → 2026-11-11 (+97d) | 2026-09-21 → 2026-12-27 (+97d) | 12d → none |
| 5 | **Termination and Testing Works** | 2026-08-01 → 2026-11-05 (+96d) | 2026-11-15 → 2027-02-18 (+95d) |  |
| PRO-SL-MF-130 | Manufacturing of Fuse Boxes for Street Lighting Network | 2026-08-01 → 2026-11-05 (+96d) | 2026-10-21 → 2027-01-25 (+96d) | 28d → none |
| PRO-SL-MF-170 | Manufacturing of Cable Lugs for Street Lighting Network | 2026-10-22 → 2027-01-26 (+96d) | 2026-11-15 → 2027-02-18 (+95d) | 28d → none |
| 1DL | **1st Material Delivery & Site Inspection** | 2026-08-16 → 2026-11-21 (+97d) | 2026-11-29 → 2027-03-04 (+95d) |  |
| 1 | **Cabling Works** | 2026-08-16 → 2026-11-21 (+97d) | 2026-08-22 → 2026-11-26 (+96d) |  |
| PRO-SL-1DL-100 | 1ST Material Delivery for Lighting Cables of Street Lighting Network | 2026-08-16 → 2026-11-21 (+97d) | 2026-08-22 → 2026-11-26 (+96d) | 23d → none |
| 2 | **Lighting Poles Works** | 2026-09-09 → 2026-12-15 (+97d) | 2026-09-30 → 2027-01-04 (+96d) |  |
| PRO-SL-1DL-110 | 1ST Material Delivery for Lighting Poles Foundations of Street Lighting Network | 2026-09-09 → 2026-12-15 (+97d) | 2026-09-15 → 2026-12-21 (+97d) | 8d → none |
| PRO-SL-1DL-120 | 1ST Material Delivery for Lighting Poles of Street Lighting Network | 2026-09-16 → 2026-12-22 (+97d) | 2026-09-22 → 2026-12-28 (+97d) | 11d → none |
| PRO-SL-1DL-140 | 1ST Material Delivery for Lighting Fixtures of Street Lighting Network | 2026-09-24 → 2026-12-29 (+96d) | 2026-09-30 → 2027-01-04 (+96d) | 11d → none |
| 3 | **Distribution Panel Board** | 2026-10-15 → 2027-01-19 (+96d) | 2026-10-21 → 2027-01-25 (+96d) |  |
| PRO-SL-1DL-160 | 1ST Material Delivery for Distrubution Panel Boards of Street Lighting Network | 2026-10-15 → 2027-01-19 (+96d) | 2026-10-21 → 2027-01-25 (+96d) | 14d → none |
| 5 | **Termination and Testing Works** | 2026-10-22 → 2027-01-26 (+96d) | 2026-11-22 → 2027-02-25 (+95d) |  |
| PRO-SL-1DL-130 | 1ST Material Delivery for Fuse Boxes of Street Lighting Network | 2026-10-22 → 2027-01-26 (+96d) | 2026-10-28 → 2027-02-01 (+96d) | 29d → none |
| PRO-SL-1DL-170 | 1ST Material Delivery for Cable Lugs of Street Lighting Network | 2026-11-16 → 2027-02-20 (+96d) | 2026-11-22 → 2027-02-25 (+95d) | 28d → none |
| 4 | **Earthing System Works** | 2026-11-23 → 2027-02-27 (+96d) | 2026-11-29 → 2027-03-04 (+95d) |  |
| PRO-SL-1DL-150 | 1ST Material Delivery for Lighting Earthing of Street Lighting Network | 2026-11-23 → 2027-02-27 (+96d) | 2026-11-29 → 2027-03-04 (+95d) | 28d → none |
| DL | **Material Delivery & Site Inspection** | 2026-08-23 → 2026-11-28 (+97d) | 2026-12-16 → 2027-03-25 (+99d) |  |
| 1 | **Cabling Works** | 2026-08-23 → 2026-11-28 (+97d) | 2026-09-15 → 2026-12-21 (+97d) |  |
| PRO-R25-SL-DL-100 | Material Delivery & Site Inspection of Lighting Cables for Street Lighting Network | 2026-08-23 → 2026-11-28 (+97d) | 2026-09-15 → 2026-12-21 (+97d) | 23d → none |
| 2 | **Lighting Poles Works** | 2026-09-09 → 2026-12-15 (+97d) | 2026-10-28 → 2027-02-01 (+96d) |  |
| PRO-R25-SL-DL-110 | Material Delivery & Site Inspection of Lighting Poles Foundations for Street Lighting Network | 2026-09-09 → 2026-12-15 (+97d) | 2026-10-04 → 2027-01-07 (+95d) | 8d → none |
| PRO-R25-SL-DL-120 | Material Delivery & Site Inspection of Lighting Poles for Street Lighting Network | 2026-10-05 → 2027-01-09 (+96d) | 2026-10-28 → 2027-02-01 (+96d) | 8d → none |
| PRO-R25-SL-DL-140 | Material Delivery & Site Inspection of Lighting Fixtures for Street Lighting Network | 2026-10-05 → 2027-01-09 (+96d) | 2026-10-28 → 2027-02-01 (+96d) | 8d → none |
| 3 | **Distribution Panel Board** | 2026-10-29 → 2027-02-02 (+96d) | 2026-11-22 → 2027-02-25 (+95d) |  |
| PRO-R25-SL-DL-160 | Material Delivery & Site Inspection of Distrubution Panel Boards for Street Lighting Network | 2026-10-29 → 2027-02-02 (+96d) | 2026-11-22 → 2027-02-25 (+95d) | 8d → none |
| 4 | **Termination and Testing Works** | 2026-11-23 → 2027-02-27 (+96d) | 2026-12-16 → 2027-03-25 (+99d) |  |
| PRO-R25-SL-DL-130 | Material Delivery & Site Inspection of Fuse Boxes for Street Lighting Network | 2026-11-23 → 2027-02-27 (+96d) | 2026-12-16 → 2027-03-25 (+99d) | 8d → none |
| PRO-R25-SL-DL-170 | Material Delivery & Site Inspection of Cable Lugs for Street Lighting Network | 2026-11-23 → 2027-02-27 (+96d) | 2026-12-16 → 2027-03-25 (+99d) | 28d → none |
| 5 | **Earthing System Works** | 2026-11-23 → 2027-02-27 (+96d) | 2026-12-16 → 2027-03-25 (+99d) |  |
| PRO-R25-SL-DL-150 | Material Delivery & Site Inspection of Lighting Earthing for Street Lighting Network | 2026-11-23 → 2027-02-27 (+96d) | 2026-12-16 → 2027-03-25 (+99d) | 28d → none |
| TE | **Telecom and Light Current Network** | 2026-07-30 → 2026-11-04 (+97d) | 2026-11-16 → 2027-02-20 (+96d) |  |
| PO | **Issuance of Purchase Orders** | 2026-07-30 → 2026-11-04 (+97d) | 2026-08-22 → 2026-11-26 (+96d) |  |
| 1 | **Ducts Works** | 2026-07-30 → 2026-11-04 (+97d) | 2026-08-06 → 2026-11-11 (+97d) |  |

| ID | Task | Start | Finish | Total float |
| --- | --- | --- | --- | --- |
| PRO-TE-PO-100 | Issuance of Purchase Order for Ducts forTelecom Network | 2026-07-30 → 2026-11-04 (+97d) | 2026-08-06 → 2026-11-11 (+97d) | 23d → none |
| 3 | **Manholes Works** | 2026-07-30 → 2026-11-04 (+97d) | 2026-08-06 → 2026-11-11 (+97d) |  |
| PRO-TE-PO-110 | Issuance of Purchase Order for Manholes forTelecom Network | 2026-07-30 → 2026-11-04 (+97d) | 2026-08-06 → 2026-11-11 (+97d) | 23d → none |
| 2 | **CCTV, Telephone, MSN, ACs System Works** | 2026-07-30 → 2026-11-04 (+97d) | 2026-08-22 → 2026-11-26 (+96d) |  |
| PRO-CTV-PO-100 | Issuance of Purchase Order for Civil and Finishes Works of CCTV Complete System | 2026-07-30 → 2026-11-04 (+97d) | 2026-08-22 → 2026-11-26 (+96d) | 23d → none |
| MF | **Manufacturing of Material** | 2026-08-08 → 2026-11-12 (+96d) | 2026-10-28 → 2027-02-01 (+96d) |  |
| 1 | **Ducts Works** | 2026-08-08 → 2026-11-12 (+96d) | 2026-08-30 → 2026-12-05 (+97d) |  |
| PRO-TE-MF-100 | Manufacturing of Ducts for Telecom Network | 2026-08-08 → 2026-11-12 (+96d) | 2026-08-30 → 2026-12-05 (+97d) | 31d → none |
| 3 | **Manholes Works** | 2026-08-31 → 2026-12-06 (+97d) | 2026-09-22 → 2026-12-28 (+97d) |  |
| PRO-TE-MF-110 | Manufacturing of Manholes for Telecom Network | 2026-08-31 → 2026-12-06 (+97d) | 2026-09-22 → 2026-12-28 (+97d) | 31d → none |
| 2 | **CCTV, Telephone, MSN, ACs System Works** | 2026-09-24 → 2026-12-29 (+96d) | 2026-10-28 → 2027-02-01 (+96d) |  |
| PRO-CTV-MF-100 | Manufacturing of Civil and Finishes Works for CCTV Complete System | 2026-09-24 → 2026-12-29 (+96d) | 2026-10-28 → 2027-02-01 (+96d) | 46d → none |
| 1DL | **1st Material Delivery & Site Inspection** | 2026-08-31 → 2026-12-06 (+97d) | 2026-11-04 → 2027-02-08 (+96d) |  |
| 1 | **Ducts Works** | 2026-08-31 → 2026-12-06 (+97d) | 2026-09-06 → 2026-12-12 (+97d) |  |
| PRO-TE-1DL-100 | 1ST Material Delivery for Ducts of Telecom Network | 2026-08-31 → 2026-12-06 (+97d) | 2026-09-06 → 2026-12-12 (+97d) | 39d → none |
| 3 | **Manholes Works** | 2026-09-24 → 2026-12-29 (+96d) | 2026-09-30 → 2027-01-04 (+96d) |  |
| PRO-TE-1DL-110 | 1ST Material Delivery for Manholes of Telecom Network | 2026-09-24 → 2026-12-29 (+96d) | 2026-09-30 → 2027-01-04 (+96d) | 31d → none |
| 2 | **CCTV, Telephone, MSN, ACs System Works** | 2026-10-29 → 2027-02-02 (+96d) | 2026-11-04 → 2027-02-08 (+96d) |  |
| PRO-CTV-1DL-100 | 1ST Material Delivery for Civil and Finishes Works of CCTV Complete System | 2026-10-29 → 2027-02-02 (+96d) | 2026-11-04 → 2027-02-08 (+96d) | 46d → none |
| DL | **Material Delivery & Site Inspection** | 2026-09-07 → 2026-12-13 (+97d) | 2026-11-16 → 2027-02-20 (+96d) |  |
| 1 | **Ducts Works** | 2026-09-07 → 2026-12-13 (+97d) | 2026-09-24 → 2026-12-29 (+96d) |  |
| PRO-R25-TE-DL-100 | Material Delivery & Site Inspection for Ducts of Telecom Network | 2026-09-07 → 2026-12-13 (+97d) | 2026-09-24 → 2026-12-29 (+96d) | 39d → none |
| 3 | **Manholes Works** | 2026-10-01 → 2027-01-05 (+96d) | 2026-10-18 → 2027-01-21 (+95d) |  |
| PRO-R25-TE-DL-110 | Material Delivery & Site Inspection of Manholes for Telecom Network | 2026-10-01 → 2027-01-05 (+96d) | 2026-10-18 → 2027-01-21 (+95d) | 34d → none |
| 2 | **CCTV, Telephone, MSN, ACs System Works** | 2026-11-05 → 2027-02-09 (+96d) | 2026-11-16 → 2027-02-20 (+96d) |  |
| PRO-R25-CTV-DL-100 | Material Delivery & Site Inspection of for Civil and Finishes Works of CCTV Complete System | 2026-11-05 → 2027-02-09 (+96d) | 2026-11-16 → 2027-02-20 (+96d) | 46d → none |
| RD | **Road Works** | 2026-06-23 → 2026-09-28 (+97d) | 2026-12-26 → 2027-04-04 (+99d) |  |
| PO | **Issuance of Purchase Orders** | 2026-06-23 → 2026-09-28 (+97d) | 2026-08-10 → 2026-11-15 (+97d) |  |
| 1 | **Road Works** | 2026-06-23 → 2026-09-28 (+97d) | 2026-08-10 → 2026-11-15 (+97d) |  |
| PRO-RD-PO-100 | Issuance of Purchase Order for Subgrade of Road Works | 2026-06-23 → 2026-09-28 (+97d) | 2026-06-30 → 2026-10-05 (+97d) | 19d → none |
| PRO-RD-PO-110 | Issuance of Purchase Order for Aggregate Base Course of Road Works | 2026-07-01 → 2026-10-06 (+97d) | 2026-07-08 → 2026-10-13 (+97d) | 22d → none |
| PRO-RD-PO-120 | Issuance of Purchase Order for Prime Coat of Road Works | 2026-07-09 → 2026-10-14 (+97d) | 2026-07-16 → 2026-10-21 (+97d) | 25d → none |
| PRO-RD-PO-130 | Issuance of Purchase Order for Asphaltic Base Course Layer of Road Works | 2026-07-18 → 2026-10-22 (+96d) | 2026-07-25 → 2026-10-29 (+96d) | 25d → none |
| PRO-RD-PO-180 | Issuance of Purchase Order for Asphaltic Wearing Course Layer for Roads Network | 2026-07-26 → 2026-10-31 (+97d) | 2026-08-02 → 2026-11-07 (+97d) | 25d → none |
| PRO-RD-PO-190 | Issuance of Purchase Order for Tack Coat Layer for Roads Network | 2026-08-03 → 2026-11-08 (+97d) | 2026-08-10 → 2026-11-15 (+97d) | 25d → none |
| 2 | **Pavement Works** | 2026-07-09 → 2026-10-14 (+97d) | 2026-07-25 → 2026-10-29 (+96d) |  |
| PRO-RD-PO-140 | Issuance of Purchase Order for Interlock Tiles of Landscaping | 2026-07-09 → 2026-10-14 (+97d) | 2026-07-16 → 2026-10-21 (+97d) | 37d → none |
| PRO-RD-PO-150 | Issuance of Purchase Order for Curbstones of Landscaping | 2026-07-18 → 2026-10-22 (+96d) | 2026-07-25 → 2026-10-29 (+96d) | 37d → none |
| 3 | **Traffic Signs Boards and Roads Marking** | 2026-07-26 → 2026-10-31 (+97d) | 2026-08-10 → 2026-11-15 (+97d) |  |
| PRO-RD-PO-160 | Issuance of Purchase Order for Traffic Signs Boards of Road Works | 2026-07-26 → 2026-10-31 (+97d) | 2026-08-02 → 2026-11-07 (+97d) | 37d → none |
| PRO-RD-PO-170 | Issuance of Purchase Order for Road Markings of Road Works | 2026-08-03 → 2026-11-08 (+97d) | 2026-08-10 → 2026-11-15 (+97d) | 44d → none |
| MF | **Manufacturing of Material** | 2026-07-01 → 2026-10-06 (+97d) | 2026-11-12 → 2027-02-16 (+96d) |  |
| 1 | **Road Works** | 2026-07-01 → 2026-10-06 (+97d) | 2026-10-14 → 2027-01-18 (+96d) |  |
| PRO-RD-MF-100 | Manufacturing of Subgrade for Road Works | 2026-07-01 → 2026-10-06 (+97d) | 2026-07-12 → 2026-10-17 (+97d) | 19d → none |
| PRO-RD-MF-110 | Manufacturing of Aggregate Base Course for Road Works | 2026-07-13 → 2026-10-18 (+97d) | 2026-08-04 → 2026-11-09 (+97d) | 19d → none |
| PRO-RD-MF-120 | Manufacturing of Prime Coat for Road Works | 2026-08-05 → 2026-11-10 (+97d) | 2026-08-27 → 2026-12-02 (+97d) | 19d → none |
| PRO-RD-MF-190 | Manufacturing of Tack Coat Layer for Roads Network | 2026-08-11 → 2026-11-16 (+97d) | 2026-10-08 → 2027-01-12 (+96d) | 25d → none |
| PRO-RD-MF-130 | Manufacturing of Asphaltic Base Course Layer for Road Works | 2026-08-29 → 2026-12-03 (+96d) | 2026-09-20 → 2026-12-26 (+97d) | 19d → none |
| PRO-RD-MF-180 | Manufacturing of Asphaltic Wearing Course Layer for Roads Network | 2026-09-21 → 2026-12-27 (+97d) | 2026-10-14 → 2027-01-18 (+96d) | 19d → none |
| 2 | **Pavement Works** | 2026-10-10 → 2027-01-13 (+95d) | 2026-11-02 → 2027-02-06 (+96d) |  |
| PRO-RD-MF-140 | Manufacturing of Interlock Tiles for Landscaping | 2026-10-10 → 2027-01-13 (+95d) | 2026-11-02 → 2027-02-06 (+96d) | 25d → none |
| PRO-RD-MF-150 | Manufacturing of Curbstones for Landscaping | 2026-10-10 → 2027-01-13 (+95d) | 2026-11-01 → 2027-02-04 (+95d) | 37d → none |
| 3 | **Traffic Signs Boards and Roads Marking** | 2026-08-03 → 2026-11-08 (+97d) | 2026-11-12 → 2027-02-16 (+96d) |  |
| PRO-RD-MF-160 | Manufacturing of Traffic Signs Boards for Road Works | 2026-08-03 → 2026-11-08 (+97d) | 2026-11-04 → 2027-02-08 (+96d) | 37d → none |
| PRO-RD-MF-170 | Manufacturing of Road Markings for Road Works | 2026-08-11 → 2026-11-16 (+97d) | 2026-11-12 → 2027-02-16 (+96d) | 44d → none |
| 1DL | **1st Material Delivery & Site Inspection** | 2026-07-13 → 2026-10-18 (+97d) | 2026-12-05 → 2027-03-14 (+99d) |  |
| 1 | **Road Works** | 2026-07-13 → 2026-10-18 (+97d) | 2026-10-31 → 2027-02-03 (+95d) |  |
| PRO-RD-1DL-100 | 1ST Material Delivery for Subgrade of Road Works | 2026-07-13 → 2026-10-18 (+97d) | 2026-07-20 → 2026-10-25 (+97d) | 35d → none |
| PRO-RD-1DL-110 | 1ST Material Delivery for Aggregate Base Course of Road Works | 2026-08-05 → 2026-11-10 (+97d) | 2026-08-12 → 2026-11-17 (+97d) | 36d → none |
| PRO-RD-1DL-120 | 1ST Material Delivery for Prime Coat of Road Works | 2026-08-29 → 2026-12-03 (+96d) | 2026-09-14 → 2026-12-20 (+97d) | 29d → none |
| PRO-RD-1DL-130 | 1ST Material Delivery for Asphaltic Base Course Layer of Road Works | 2026-09-21 → 2026-12-27 (+97d) | 2026-09-29 → 2027-01-03 (+96d) | 28d → none |
| PRO-RD-1DL-180 | 1ST Material Delivery for Asphaltic Wearing Course Layer for Roads Network | 2026-10-15 → 2027-01-19 (+96d) | 2026-10-22 → 2027-01-26 (+96d) | 19d → none |
| PRO-RD-1DL-190 | 1ST Material Delivery for Tack Coat Layer for Roads Network | 2026-10-24 → 2027-01-27 (+95d) | 2026-10-31 → 2027-02-03 (+95d) | 23d → none |
| 2 | **Pavement Works** | 2026-11-03 → 2027-02-07 (+96d) | 2026-11-18 → 2027-02-22 (+96d) |  |
| PRO-RD-1DL-140 | 1ST Material Delivery for Interlock Tiles of Landscaping | 2026-11-03 → 2027-02-07 (+96d) | 2026-11-10 → 2027-02-14 (+96d) | 25d → none |
| PRO-RD-1DL-150 | 1ST Material Delivery for Curbstones of Landscaping | 2026-11-11 → 2027-02-15 (+96d) | 2026-11-18 → 2027-02-22 (+96d) | 29d → none |
| 3 | **Traffic Signs Boards and Roads Marking** | 2026-11-19 → 2027-02-23 (+96d) | 2026-12-05 → 2027-03-14 (+99d) |  |
| PRO-RD-1DL-170 | 1ST Material Delivery for Road Markings of Road Works | 2026-11-19 → 2027-02-23 (+96d) | 2026-11-26 → 2027-03-02 (+96d) | 39d → none |
| PRO-RD-1DL-160 | 1ST Material Delivery for Traffic Signs Boards of Road Works | 2026-11-28 → 2027-03-03 (+95d) | 2026-12-05 → 2027-03-14 (+99d) | 39d → none |
| DL | **Material Delivery & Site Inspection** | 2026-07-21 → 2026-10-26 (+97d) | 2026-12-26 → 2027-04-04 (+99d) |  |

| ID | Task | Start | Finish | Total float |
| --- | --- | --- | --- | --- |
| 1 | **Pre-Bituminous Construction** | 2026-07-21 → 2026-10-26 (+97d) | 2026-09-07 → 2026-12-13 (+97d) |  |
| PRO-R25-RD-DL-100 | Material Delivery & Site Inspection for Subgrade of Road Works | 2026-07-21 → 2026-10-26 (+97d) | 2026-08-13 → 2026-11-18 (+97d) | 35d → none |
| PRO-R25-RD-DL-110 | Material Delivery & Site Inspection for Aggregate Base Course of Road Works | 2026-08-15 → 2026-11-19 (+96d) | 2026-09-07 → 2026-12-13 (+97d) | 35d → none |
| 4 | **Bituminous Construction** | 2026-09-15 → 2026-12-21 (+97d) | 2026-11-17 → 2027-02-21 (+96d) |  |
| PRO-R25-RD-DL-160 | Material Delivery & Site Inspection for Prime Coat Layer of Road Works | 2026-09-15 → 2026-12-21 (+97d) | 2026-09-28 → 2027-01-02 (+96d) | 29d → none |
| PRO-R25-RD-DL-170 | Material Delivery & Site Inspection for Asphaltic Base Course Layer of Road Works | 2026-09-30 → 2027-01-04 (+96d) | 2026-10-12 → 2027-01-16 (+96d) | 28d → none |
| PRO-RD-DL-200 | Material Delivery for Asphaltic Wearing Course Layer for Roads Network | 2026-10-24 → 2027-01-27 (+95d) | 2026-11-04 → 2027-02-08 (+96d) | 19d → none |
| PRO-RD-DL-210 | Material Delivery for Tack Coat Layer for Roads Network | 2026-11-05 → 2027-02-09 (+96d) | 2026-11-17 → 2027-02-21 (+96d) | 19d → none |
| 2 | **Pavement Works** | 2026-11-18 → 2027-02-22 (+96d) | 2026-12-13 → 2027-03-22 (+99d) |  |
| PRO-R25-RD-DL-120 | Material Delivery & Site Inspection of Interlock Tiles for Landscaping | 2026-11-18 → 2027-02-22 (+96d) | 2026-11-30 → 2027-03-06 (+96d) | 19d → none |
| PRO-R25-RD-DL-130 | Material Delivery & Site Inspection of Curbstones for Landscaping | 2026-12-01 → 2027-03-07 (+96d) | 2026-12-13 → 2027-03-22 (+99d) | 19d → none |
| 3 | **Traffic Signs Boards and Roads Marking** | 2026-12-01 → 2027-03-07 (+96d) | 2026-12-26 → 2027-04-04 (+99d) |  |
| PRO-R25-RD-DL-150 | Material Delivery & Site Inspection of Road Markings For Road Works | 2026-12-01 → 2027-03-07 (+96d) | 2026-12-13 → 2027-03-22 (+99d) | 32d → none |
| PRO-R25-RD-DL-140 | Material Delivery & Site Inspection of Traffic Signs Boards For Road Works | 2026-12-14 → 2027-03-23 (+99d) | 2026-12-26 → 2027-04-04 (+99d) | 32d → none |
| 1 | **Superstructure Works** | 2026-06-23 → 2026-09-28 (+97d) | 2026-08-23 → 2026-11-28 (+97d) |  |
| 1 | **Issuance of Purchase Orders** | 2026-06-23 → 2026-09-28 (+97d) | 2026-07-05 → 2026-10-10 (+97d) |  |
| SL1 | **Water Pump Station** | 2026-06-23 → 2026-09-28 (+97d) | 2026-06-27 → 2026-10-01 (+96d) |  |
| PRO-LS-CV-PO-20 | Issuance of Purchase Order for Works for Water Pump Station | 2026-06-23 → 2026-09-28 (+97d) | 2026-06-27 → 2026-10-01 (+96d) | 0d → none |
| SL11 | **Storage Tank (TSE)** | 2026-06-28 → 2026-10-03 (+97d) | 2026-07-05 → 2026-10-10 (+97d) |  |
| PRO-TSE-CV-PO-30 | Issuance of Purchase Order for Works for Storage Tank (TSE) | 2026-06-28 → 2026-10-03 (+97d) | 2026-07-05 → 2026-10-10 (+97d) | 1d → none |
| SL111 | **Control Room** | 2026-06-28 → 2026-10-03 (+97d) | 2026-07-05 → 2026-10-10 (+97d) |  |
| PRO-TSE-CV-PO-40 | Issuance of Purchase Order for Works for Control Room | 2026-06-28 → 2026-10-03 (+97d) | 2026-07-05 → 2026-10-10 (+97d) | 1d → none |
| SL | **Sewage Pump Stations** | 2026-06-28 → 2026-10-03 (+97d) | 2026-07-05 → 2026-10-10 (+97d) |  |
| PRO-SPS-CV-PO-10 | Issuance of Purchase Order for Works of Sewage Pump Station | 2026-06-28 → 2026-10-03 (+97d) | 2026-07-05 → 2026-10-10 (+97d) | 1d → none |
| SL12 | **Gaurd Room** | 2026-06-28 → 2026-10-03 (+97d) | 2026-07-05 → 2026-10-10 (+97d) |  |
| PRO-GR-CV-PO-40 | Issuance of Purchase Order for Materials for Gaurd Room | 2026-06-28 → 2026-10-03 (+97d) | 2026-07-05 → 2026-10-10 (+97d) | 1d → none |
| SL121 | **Boundary Fence** | 2026-06-28 → 2026-10-03 (+97d) | 2026-07-05 → 2026-10-10 (+97d) |  |
| PRO-FE-CV-PO-50 | Issuance of Purchase Order for Materials for Boundary Fence | 2026-06-28 → 2026-10-03 (+97d) | 2026-07-05 → 2026-10-10 (+97d) | 1d → none |
| 2 | **Manufacturing of Material** | 2026-06-28 → 2026-10-03 (+97d) | 2026-07-29 → 2026-11-03 (+97d) |  |
| SL1 | **Water Pump Station** | 2026-06-28 → 2026-10-03 (+97d) | 2026-07-05 → 2026-10-10 (+97d) |  |
| PRO-LS-CV-MF-30 | Manufacturing of Works for Works for Water Pump Station | 2026-06-28 → 2026-10-03 (+97d) | 2026-07-05 → 2026-10-10 (+97d) | 0d → none |
| SL11 | **Storage Tank (TSE)** | 2026-07-06 → 2026-10-11 (+97d) | 2026-07-21 → 2026-10-26 (+97d) |  |
| PRO-TSE-CV-MF-40 | Manufacturing of Works for Storage Tank (TSE) | 2026-07-06 → 2026-10-11 (+97d) | 2026-07-21 → 2026-10-26 (+97d) | 1d → none |
| SL111 | **Control Room** | 2026-07-06 → 2026-10-11 (+97d) | 2026-07-29 → 2026-11-03 (+97d) |  |
| PRO-TSE-CV-MF-50 | Manufacturing of Works for Control Room | 2026-07-06 → 2026-10-11 (+97d) | 2026-07-29 → 2026-11-03 (+97d) | 1d → none |
| SL | **Sewage Pump Stations** | 2026-07-06 → 2026-10-11 (+97d) | 2026-07-29 → 2026-11-03 (+97d) |  |
| PRO-SPS-CV-MF-10 | Manufacturing of Works of Sewage Pump Station | 2026-07-06 → 2026-10-11 (+97d) | 2026-07-29 → 2026-11-03 (+97d) | 1d → none |
| SL12 | **Gaurd Room** | 2026-07-06 → 2026-10-11 (+97d) | 2026-07-29 → 2026-11-03 (+97d) |  |
| PRO-GR-CV-MF-50 | Manufacturing of Materials for Gaurd Room | 2026-07-06 → 2026-10-11 (+97d) | 2026-07-29 → 2026-11-03 (+97d) | 1d → none |
| SL121 | **Boundary Fence** | 2026-07-06 → 2026-10-11 (+97d) | 2026-07-29 → 2026-11-03 (+97d) |  |
| PRO-FE-CV-MF-60 | Manufacturing of Materials for Boundary Fence | 2026-07-06 → 2026-10-11 (+97d) | 2026-07-29 → 2026-11-03 (+97d) | 1d → none |
| 3 | **1st Material Delivery & Site Inspection** | 2026-06-28 → 2026-10-03 (+97d) | 2026-08-06 → 2026-11-11 (+97d) |  |
| SL1 | **Water Pump Station** | 2026-06-28 → 2026-10-03 (+97d) | 2026-07-04 → 2026-10-08 (+96d) |  |
| PRO-LS-CV-1DL-40 | 1ST Material Delivery for Works of Water Pump Station | 2026-06-28 → 2026-10-03 (+97d) | 2026-07-04 → 2026-10-08 (+96d) | 0d → none |
| SL11 | **Storage Tank (TSE)** | 2026-07-22 → 2026-10-27 (+97d) | 2026-07-29 → 2026-11-03 (+97d) |  |
| PRO-TSE-CV-1DL-50 | 1ST Material Delivery for Works for Storage Tank (TSE) | 2026-07-22 → 2026-10-27 (+97d) | 2026-07-29 → 2026-11-03 (+97d) | 8d → none |
| SL111 | **Control Room** | 2026-07-30 → 2026-11-04 (+97d) | 2026-08-06 → 2026-11-11 (+97d) |  |
| PRO-TSE-CV-1DL-60 | 1ST Material Delivery for Works for Control Room | 2026-07-30 → 2026-11-04 (+97d) | 2026-08-06 → 2026-11-11 (+97d) | 1d → none |
| SL | **Sewage Pump Stations** | 2026-07-30 → 2026-11-04 (+97d) | 2026-08-06 → 2026-11-11 (+97d) |  |
| PRO-SPS-CV-1DL-10 | 1ST Material Delivery for Works of Sewage Pump Station | 2026-07-30 → 2026-11-04 (+97d) | 2026-08-06 → 2026-11-11 (+97d) | 1d → none |
| SL12 | **Gaurd Room** | 2026-07-30 → 2026-11-04 (+97d) | 2026-08-06 → 2026-11-11 (+97d) |  |
| PRO-GR-CV-1DL-60 | 1ST Material Delivery for Materials for Gaurd Room | 2026-07-30 → 2026-11-04 (+97d) | 2026-08-06 → 2026-11-11 (+97d) | 1d → none |
| SL121 | **Boundary Fence** | 2026-07-30 → 2026-11-04 (+97d) | 2026-08-06 → 2026-11-11 (+97d) |  |
| PRO-FE-CV-1DL-70 | 1ST Material Delivery for Materials for Boundary Fence | 2026-07-30 → 2026-11-04 (+97d) | 2026-08-06 → 2026-11-11 (+97d) | 1d → none |
| 4 | **Material Delivery & Site Inspection** | 2026-06-28 → 2026-10-03 (+97d) | 2026-08-23 → 2026-11-28 (+97d) |  |
| SL1 | **Water Pump Station** | 2026-06-28 → 2026-10-03 (+97d) | 2026-07-08 → 2026-10-13 (+97d) |  |
| PRO-LS-CV-DL-50 | Material Delivery & Site Inspection for Works for Water Pump Station | 2026-06-28 → 2026-10-03 (+97d) | 2026-07-08 → 2026-10-13 (+97d) | 0d → none |
| SL11 | **Storage Tank (TSE)** | 2026-07-09 → 2026-10-14 (+97d) | 2026-08-09 → 2026-11-14 (+97d) |  |
| PRO-TSE-CV-DL-60 | Material Delivery & Site Inspection for Works for Storage Tank (TSE) | 2026-07-09 → 2026-10-14 (+97d) | 2026-08-09 → 2026-11-14 (+97d) | 32d → none |
| SL111 | **Control Room** | 2026-08-08 → 2026-11-12 (+96d) | 2026-08-23 → 2026-11-28 (+97d) |  |
| PRO-TSE-CV-DL-70 | Material Delivery & Site Inspection for Works for Control Room | 2026-08-08 → 2026-11-12 (+96d) | 2026-08-23 → 2026-11-28 (+97d) | 7d → none |
| SL | **Sewage Pump Stations** | 2026-08-08 → 2026-11-12 (+96d) | 2026-08-23 → 2026-11-28 (+97d) |  |
| PRO-SPS-CV-DL-10 | Material Delivery & Site Inspection for Works for Pump Station | 2026-08-08 → 2026-11-12 (+96d) | 2026-08-23 → 2026-11-28 (+97d) | 17d → none |
| SL12 | **Gaurd Room** | 2026-08-08 → 2026-11-12 (+96d) | 2026-08-23 → 2026-11-28 (+97d) |  |
| PRO-GR-CV-DL-70 | Material Delivery & Site Inspection for Materials for Gaurd Room | 2026-08-08 → 2026-11-12 (+96d) | 2026-08-23 → 2026-11-28 (+97d) | 17d → none |
| SL121 | **Boundary Fence** | 2026-08-08 → 2026-11-12 (+96d) | 2026-08-23 → 2026-11-28 (+97d) |  |
| PRO-FE-CV-DL-80 | Material Delivery & Site Inspection for Materials for Boundary Fence | 2026-08-08 → 2026-11-12 (+96d) | 2026-08-23 → 2026-11-28 (+97d) | 17d → none |
| IR1 | **Softscape and Planting Works** | 2026-07-09 → 2026-10-14 (+97d) | 2026-10-25 → 2027-01-28 (+95d) |  |
| PO | **Issuance of Purchase Orders** | 2026-07-09 → 2026-10-14 (+97d) | 2026-07-22 → 2026-10-27 (+97d) |  |
| 1 | **Main Line Pipes** | 2026-07-09 → 2026-10-14 (+97d) | 2026-07-22 → 2026-10-27 (+97d) |  |

| ID | Task | Start | Finish | Complete | Total float |
| --- | --- | --- | --- | --- | --- |
| PRO-IR-PO-140 | Issuance of Purchase Order for Softscape and Planting Works | 2026-07-09 → 2026-10-14 (+97d) | 2026-07-15 → 2026-10-20 (+97d) |  | 5d → none |
| PRO-IR-PO-150 | Issuance of Purchase Order for Site Furnishings (Seating Bench,Stone Boulders and Gravel) | 2026-07-16 → 2026-10-21 (+97d) | 2026-07-22 → 2026-10-27 (+97d) |  | 15d → none |
| MF | **Manufacturing of Material** | 2026-07-16 → 2026-10-21 (+97d) | 2026-10-01 → 2027-01-05 (+96d) |  |  |
| 1 | **Main Line Pipes** | 2026-07-16 → 2026-10-21 (+97d) | 2026-10-01 → 2027-01-05 (+96d) |  |  |
| PRO-IR-MF-140 | Manufacturing of Softscape and Planting Works | 2026-07-16 → 2026-10-21 (+97d) | 2026-09-24 → 2026-12-29 (+96d) |  | 5d → none |
| PRO-IR-MF-150 | Manufacturing of Valves for Site Furnishings (Seating Bench,Stone Boulders and Gravel) | 2026-07-23 → 2026-10-28 (+97d) | 2026-10-01 → 2027-01-05 (+96d) |  | 15d → none |
| 1DL | **1st Material Delivery & Site Inspection** | 2026-09-26 → 2026-12-30 (+95d) | 2026-10-08 → 2027-01-12 (+96d) |  |  |
| 1 | **Main Line Pipes** | 2026-09-26 → 2026-12-30 (+95d) | 2026-10-08 → 2027-01-12 (+96d) |  |  |
| PRO-IR-1DL-140 | 1ST Material Delivery for Softscape and Planting Works | 2026-09-26 → 2026-12-30 (+95d) | 2026-10-01 → 2027-01-05 (+96d) |  | 5d → none |
| PRO-IR-1DL-150 | 1ST Material Delivery for Site Furnishings (Seating Bench,Stone Boulders and Gravel) | 2026-10-03 → 2027-01-06 (+95d) | 2026-10-08 → 2027-01-12 (+96d) |  | 15d → none |
| DL | **Material Delivery & Site Inspection** | 2026-10-03 → 2027-01-06 (+95d) | 2026-10-25 → 2027-01-28 (+95d) |  |  |
| 1 | **Main Line Pipes** | 2026-10-03 → 2027-01-06 (+95d) | 2026-10-25 → 2027-01-28 (+95d) |  |  |
| PRO-R25-IR-DL-140 | Material Delivery & Site Inspection of Softscape and Planting Works | 2026-10-03 → 2027-01-06 (+95d) | 2026-10-13 → 2027-01-17 (+96d) |  | 5d → none |
| PRO-R25-IR-DL-150 | Material Delivery & Site Inspection of Site Furnishings (Seating Bench,Stone Boulders and Gravel) | 2026-10-14 → 2027-01-18 (+96d) | 2026-10-25 → 2027-01-28 (+95d) |  | 11d → none |
| LL | **Long Lead Time Items** | 2026-07-09 → 2026-10-14 (+97d) | 2027-02-07 → 2027-05-23 (+105d) |  |  |
| 1 | **Superstructure Works** | 2026-07-09 → 2026-10-14 (+97d) | 2027-02-07 → 2027-05-23 (+105d) |  |  |
| SL | **Sewage Pump Station** | 2026-07-09 → 2026-10-14 (+97d) | 2026-12-30 → 2027-04-08 (+99d) |  |  |
| 1 | **Issuance of Purchase Orders** | 2026-07-09 → 2026-10-14 (+97d) | 2026-07-15 → 2026-10-20 (+97d) |  |  |
| PRO-SPS-LL-PO-10 | Issuance of Purchase Order for Electromechanical Works for Pump Station | 2026-07-09 → 2026-10-14 (+97d) | 2026-07-15 → 2026-10-20 (+97d) |  | 0d → none |
| 2 | **Manufacturing of Material** | 2026-07-16 → 2026-10-21 (+97d) | 2026-11-10 → 2027-02-14 (+96d) |  |  |
| PRO-SPS-LL-MF-10 | Manufacturing of Electromechanical Works for Pump Station | 2026-07-16 → 2026-10-21 (+97d) | 2026-11-10 → 2027-02-14 (+96d) |  | 0d → none |
| 3 | **Material Shipping/Custom Clearance/Delivery** | 2026-11-11 → 2027-02-15 (+96d) | 2026-12-05 → 2027-03-14 (+99d) |  |  |
| PRO-SPS-LL-SH/DL-10 | Material Delivery for Electromechanical Works for Pump Station | 2026-11-11 → 2027-02-15 (+96d) | 2026-12-05 → 2027-03-14 (+99d) |  | 0d → none |
| 4 | **Material Site Inspection** | 2026-12-06 → 2027-03-15 (+99d) | 2026-12-30 → 2027-04-08 (+99d) |  |  |
| PRO-SPS-LL-MSI-10 | Material Site Inspection for Electromechanical Works for Pump Station | 2026-12-06 → 2027-03-15 (+99d) | 2026-12-30 → 2027-04-08 (+99d) |  | 0d → none |
| SL1 | **Water Pump Station** | 2026-07-16 → 2026-10-21 (+97d) | 2026-12-02 → 2027-03-08 (+96d) |  |  |
| 1 | **Issuance of Purchase Orders** | 2026-07-16 → 2026-10-21 (+97d) | 2026-07-23 → 2026-10-28 (+97d) |  |  |
| PRO-LS-LL-PO-20 | Issuance of Purchase Order for Electromechanical Works for Water Pump Station | 2026-07-16 → 2026-10-21 (+97d) | 2026-07-23 → 2026-10-28 (+97d) |  | 6d → none |
| 2 | **Manufacturing of Material** | 2026-07-25 → 2026-10-29 (+96d) | 2026-10-14 → 2027-01-18 (+96d) |  |  |
| PRO-LS-LL-MF-20 | Manufacturing of Electromechanical Works for Water Pump Station | 2026-07-25 → 2026-10-29 (+96d) | 2026-10-14 → 2027-01-18 (+96d) |  | 24d → none |
| 3 | **Material Shipping/Custom Clearance/Delivery** | 2026-10-15 → 2027-01-19 (+96d) | 2026-11-08 → 2027-02-11 (+95d) |  |  |
| PRO-LS-LL-SH/DL-20 | Material Delivery for Electromechanical Works for Water Pump Station | 2026-10-15 → 2027-01-19 (+96d) | 2026-11-08 → 2027-02-11 (+95d) |  | 24d → none |
| 4 | **Material Site Inspection** | 2026-11-09 → 2027-02-13 (+96d) | 2026-12-02 → 2027-03-08 (+96d) |  |  |
| PRO-LS-LL-MSI-20 | Material Site Inspection for Electromechanical Works for Water Pump Station | 2026-11-09 → 2027-02-13 (+96d) | 2026-12-02 → 2027-03-08 (+96d) |  | 24d → none |
| SL2 | **Storage Tank (TSE)** | 2026-07-25 → 2026-10-29 (+96d) | 2027-02-07 → 2027-05-23 (+105d) |  |  |
| 1 | **Issuance of Purchase Orders** | 2026-07-25 → 2026-10-29 (+96d) | 2026-08-01 → 2026-11-05 (+96d) |  |  |
| PRO-TSE-LL-PO-30 | Issuance of Purchase Order for Electromechanical Works for Storage Tank (TSE) | 2026-07-25 → 2026-10-29 (+96d) | 2026-08-01 → 2026-11-05 (+96d) |  | 6d → none |
| 2 | **Manufacturing of Material** | 2026-08-02 → 2026-11-07 (+97d) | 2026-12-20 → 2027-03-29 (+99d) |  |  |
| PRO-TSE-LL-MF-30 | Manufacturing of Electromechanical Works for Storage Tank (TSE) | 2026-08-02 → 2026-11-07 (+97d) | 2026-12-20 → 2027-03-29 (+99d) |  | 6d → none |
| 3 | **Material Shipping/Custom Clearance/Delivery** | 2026-12-21 → 2027-03-30 (+99d) | 2027-01-13 → 2027-04-22 (+99d) |  |  |
| PRO-TSE-LL-SH/DL-30 | Material Delivery for Electromechanical Works for Storage Tank (TSE) | 2026-12-21 → 2027-03-30 (+99d) | 2027-01-13 → 2027-04-22 (+99d) |  | 6d → none |
| 4 | **Material Site Inspection** | 2027-01-14 → 2027-04-24 (+100d) | 2027-02-07 → 2027-05-23 (+105d) |  |  |
| PRO-TSE-LL-MSI-30 | Material Site Inspection for Electromechanical Works for Storage Tank (TSE) | 2027-01-14 → 2027-04-24 (+100d) | 2027-02-07 → 2027-05-23 (+105d) |  | 6d → none |
| CON | **Construction Works** |  | 2027-02-28 → 2027-05-31 (+92d) |  |  |
| INF | **Infrastructure Networks** |  | 2027-02-10 → 2027-05-26 (+105d) |  |  |
| IN | **Internal** |  | 2027-02-10 → 2027-05-26 (+105d) |  |  |
| 1 | **Alignment-RD-01** |  | 2027-01-20 → 2027-04-29 (+99d) |  |  |
| EW | **Earthworks** |  | 2026-09-16 → 2026-12-16 (+91d) |  |  |
| EW | **Earthworks** |  | 2026-09-16 → 2026-12-16 (+91d) |  |  |
| CO-EW-210_R | Excavation and Backfilling Works Upto Design Level for Earthworks for Alignment-RD-01(Remaining) | 2026-06-28 → 2026-07-01 A (+3d) | 2026-07-20 → 2026-07-15 A (-5d) | 0% → 100% | 4d → none |
| CO-EW-210_R01 | Excavation and Backfilling Works Upto Design Level for Earthworks for Alignment-RD-01(Remaining)-part1 | 2026-08-25 → 2026-08-31 A (+6d) | 2026-09-16 → 2026-12-16 (+91d) | 0% → 35% | 37d → none |
| SD | **Storm Drainage Network** | 2026-06-23 → 2026-09-28 (+97d) | 2026-09-02 → 2026-12-08 (+97d) |  |  |
| MH | **Manholes** | 2026-06-23 → 2026-09-28 (+97d) | 2026-08-09 → 2026-11-14 (+97d) |  |  |
| CO-SD-MH-230 | Trench Excavation and Bedding Works for Manholes of Storm Drainage Network for Alignment-RD-01 | 2026-06-23 → 2026-09-28 (+97d) | 2026-07-06 → 2026-10-11 (+97d) |  | 7d → none |
| CO-SD-MH-240 | Install RC Footing Works for Manholes of Storm Drainage Network for Alignment-RD-01 | 2026-07-11 → 2026-10-15 (+96d) | 2026-07-20 → 2026-10-25 (+97d) |  | 4d → none |
| CO-SD-MH-250 | Install RC Wall Rings & Slab Works for Manholes of Storm Drainage Network for Alignment-RD-01 | 2026-07-21 → 2026-10-26 (+97d) | 2026-07-28 → 2026-11-02 (+97d) |  | 4d → none |
| CO-SD-MH-260 | Backfilling Works for Manholes of Storm Drainage Network for Alignment-RD-01 | 2026-07-29 → 2026-11-03 (+97d) | 2026-08-09 → 2026-11-14 (+97d) |  | 10d → none |
| ML | **Main Line Sections** | 2026-07-21 → 2026-10-26 (+97d) | 2026-08-17 → 2026-11-22 (+97d) |  |  |
| CO-SD-ML-140 | Trench Excavation and Bedding Works for Main Lines of Storm Drainage Network for Alignment-RD-01 | 2026-07-21 → 2026-10-26 (+97d) | 2026-07-29 → 2026-11-03 (+97d) |  | 11d → none |
| CO-SD-ML-150 | Pipes Laying Works for Main Lines of Storm Drainage Network for Alignment-RD-01 | 2026-07-30 → 2026-11-04 (+97d) | 2026-08-08 → 2026-11-12 (+96d) |  | 3d → none |
| CO-SD-ML-160 | Trench Backfilling and Compaction Works for Main Lines of Storm Drainage Network for Alignment-RD-01 | 2026-08-09 → 2026-11-14 (+97d) | 2026-08-17 → 2026-11-22 (+97d) |  | 3d → none |
| CB | **Catch Basin Sections** | 2026-08-09 → 2026-11-14 (+97d) | 2026-09-02 → 2026-12-08 (+97d) |  |  |
| CO-SD-CB-180 | Trench Excavation and Bedding Works for Catch Basins of Storm Drainage Network for Alignment-RD-01 | 2026-08-09 → 2026-11-14 (+97d) | 2026-08-17 → 2026-11-22 (+97d) |  | 27d → none |
| CO-SD-CB-190 | Installation and Pipes Laying Connection Works for Catch Basins of Storm Drainage Network for Alignment-RD-01 | 2026-08-18 → 2026-11-23 (+97d) | 2026-08-25 → 2026-11-30 (+97d) |  | 27d → none |
| CO-SD-CB-200 | Trench Backfilling and Compaction Works for Catch Basins of Storm Drainage Network for Alignment-RD-01 | 2026-08-26 → 2026-12-01 (+97d) | 2026-09-02 → 2026-12-08 (+97d) |  | 27d → none |
| SW | **Sewage Network** | 2026-08-18 → 2026-11-23 (+97d) | 2026-10-27 → 2027-01-31 (+96d) |  |  |
| 1 | **Manholes** | 2026-08-18 → 2026-11-23 (+97d) | 2026-10-27 → 2027-01-31 (+96d) |  |  |
| CO-SW-MH-210 | Excavation Works for Main Line Manholes of Sewage Network for Alignment-RD-01 | 2026-08-18 → 2026-11-23 (+97d) | 2026-08-31 → 2026-12-06 (+97d) |  | 3d → none |
| CO-SW-MH-220 | Installation RC Footing Works for Main Line Manholes of Sewage Network for Alignment-RD-01 | 2026-09-01 → 2026-12-07 (+97d) | 2026-09-14 → 2026-12-20 (+97d) |  | 3d → none |
| CO-SW-MH-230 | Install Grp Liner Wall Works for Main Line Manholes of Sewage Network for Alignment-RD-01 | 2026-09-15 → 2026-12-21 (+97d) | 2026-09-29 → 2027-01-03 (+96d) |  | 3d → none |

| ID | Task | Start | Finish | Total float |
| --- | --- | --- | --- | --- |
| CO-SW-MH-240 | Pouring Grp Liner Wall Works for Main Line Manholes of Sewage Network for Alignment-RD-01 | 2026-09-30 → 2027-01-04 (+96d) | 2026-10-13 → 2027-01-17 (+96d) | 3d → none |
| CO-SW-MH-250 | Backfilling Works for Main Line Manholes of Sewage Network for Alignment-RD-01 | 2026-10-14 → 2027-01-18 (+96d) | 2026-10-27 → 2027-01-31 (+96d) | 3d → none |
| ML | **Main Line Sections** | 2026-09-03 → 2026-12-09 (+97d) | 2026-10-27 → 2027-01-31 (+96d) |  |
| CO-SW-ML-140 | Trench Excavation and Bedding Works for Main Lines of Sewage Network for Alignment-RD-01 | 2026-09-03 → 2026-12-09 (+97d) | 2026-09-12 → 2026-12-17 (+96d) | 27d → none |
| CO-SW-ML-150 | Pipes Laying Works for Main Lines of Sewage Network for Alignment-RD-01 | 2026-09-13 → 2026-12-19 (+97d) | 2026-09-21 → 2026-12-27 (+97d) | 27d → none |
| CO-SW-ML-160 | Trench Backfilling and Compaction Works for Main Lines of Sewage Network for Alignment-RD-01 | 2026-10-21 → 2027-01-25 (+96d) | 2026-10-27 → 2027-01-31 (+96d) | 3d → none |
| TSE | **Treated Sewage Effluent (Tse)** | 2026-08-10 → 2026-11-15 (+97d) | 2026-09-28 → 2027-01-02 (+96d) |  |
| CO-TSE-ML-200 | Trench Excavation and Bedding Works for Main Lines of Treated Sewage Effluent (Tse) for Alignment-RD-01 | 2026-08-10 → 2026-11-15 (+97d) | 2026-08-17 → 2026-11-22 (+97d) | 22d → none |
| CO-TSE-ML-210 | Pipes Laying Works for Main Lines of Treated Sewage Effluent (Tse) for Alignment-RD-01 | 2026-08-23 → 2026-11-28 (+97d) | 2026-09-10 → 2026-12-16 (+97d) | 18d → none |
| CO-TSE-ML-230 | Trench Backfilling and Compaction Works for Treated Sewage Effluent (Tse) for Alignment-RD-01 | 2026-09-12 → 2026-12-17 (+96d) | 2026-09-28 → 2027-01-02 (+96d) | 18d → none |
| PW | **Potable Water Network** | 2026-08-10 → 2026-11-15 (+97d) | 2026-09-22 → 2026-12-28 (+97d) |  |
| ML | **Main Line Sections** | 2026-08-10 → 2026-11-15 (+97d) | 2026-09-15 → 2026-12-21 (+97d) |  |
| CO-PW-ML-140 | Trench Excavation and Bedding Works for Main Lines of Potable Water Network for Alignment-RD-01 | 2026-08-10 → 2026-11-15 (+97d) | 2026-08-16 → 2026-11-21 (+97d) | 36d → none |
| CO-PW-ML-150 | Pipes Laying and accessories for Main Lines of Potable Water Network for Alignment-RD-01 | 2026-09-02 → 2026-12-08 (+97d) | 2026-09-08 → 2026-12-14 (+97d) | 28d → none |
| CO-PW-ML-160 | Trench Backfilling and Compaction Works for Main Lines of Potable Water Network for Alignment-RD-01 | 2026-09-09 → 2026-12-15 (+97d) | 2026-09-15 → 2026-12-21 (+97d) | 28d → none |
| VC | **Valve Chamber** | 2026-08-12 → 2026-11-17 (+97d) | 2026-09-15 → 2026-12-21 (+97d) |  |
| CO-PW-VC-230 | Excavation Works for Main Line Valves and Valve Chambers of Potable Water Network for Alignment-RD-01 | 2026-08-12 → 2026-11-17 (+97d) | 2026-08-16 → 2026-11-21 (+97d) | 36d → none |
| CO-PW-VC190 | Installation of Valve Chambers of Potable Water Network for Alignment-RD-01 | 2026-08-17 → 2026-11-22 (+97d) | 2026-08-20 → 2026-11-25 (+97d) | 42d → none |
| CO-PW-VC-240 | Installation Works for Valves of Potable Water Network for Alignment-RD-01 | 2026-08-22 → 2026-11-26 (+96d) | 2026-08-25 → 2026-11-30 (+97d) | 42d → none |
| CO-PW-VC-250 | Backfilling Works for Main Line Valves and Valve Chambers of Potable Water Network for Alignment-RD-01 | 2026-09-12 → 2026-12-17 (+96d) | 2026-09-15 → 2026-12-21 (+97d) | 28d → none |
| FH | **Fire Hydrant** | 2026-08-17 → 2026-11-22 (+97d) | 2026-09-22 → 2026-12-28 (+97d) |  |
| CO-PW-FH-170 | Excavation Works for Fire Hydrants of Potable Water Network for Alignment-RD-01 | 2026-08-17 → 2026-11-22 (+97d) | 2026-09-02 → 2026-12-08 (+97d) | 36d → none |
| CO-PW-FH-180 | Installation Works for Fire Hydrant of Potable Water Network for Alignment-RD-01 | 2026-09-16 → 2026-12-22 (+97d) | 2026-09-19 → 2026-12-24 (+96d) | 25d → none |
| CO-PW-FH-190 | Trench Backfilling and Compaction Works for Fire Hydrants of Potable Water Network for Alignment-RD-01 | 2026-09-20 → 2026-12-26 (+97d) | 2026-09-22 → 2026-12-28 (+97d) | 32d → none |
| IR | **Irrigation Network** | 2026-09-29 → 2027-01-03 (+96d) | 2026-11-09 → 2027-02-13 (+96d) |  |
| ML | **Main Line Pipes** | 2026-09-29 → 2027-01-03 (+96d) | 2026-11-09 → 2027-02-13 (+96d) |  |
| CO-IR-ML-150 | Trench Excavation and Bedding Works for Main Lines of Irrigation Network for Alignment-RD-01 | 2026-09-29 → 2027-01-03 (+96d) | 2026-10-06 → 2027-01-10 (+96d) | 18d → none |
| CO-IR-ML-160 | Pipes Laying Works for Main Lines of Irrigation Network for Alignment-RD-01 | 2026-10-07 → 2027-01-11 (+96d) | 2026-10-15 → 2027-01-19 (+96d) | 18d → none |
| CO-IR-ML-170 | Installation Works for Main Line Valves of Irrigation Network for Alignment-RD-01 | 2026-10-17 → 2027-01-20 (+95d) | 2026-10-24 → 2027-01-27 (+95d) | 18d → none |
| CO-IR-ML-190 | Installation Works for Bulbblers And Sprinklers and Irrigation Control System of Irrigation Network for Alignment-RD-01 | 2026-10-25 → 2027-01-28 (+95d) | 2026-11-04 → 2027-02-08 (+96d) | 18d → none |
| CO-IR-ML-180 | Trench Backfilling and Compaction Works for Main Lines of Irrigation Network for Alignment-RD-01 | 2026-11-05 → 2027-02-09 (+96d) | 2026-11-09 → 2027-02-13 (+96d) | 18d → none |
| MV | **Medium Voltage Network** | 2026-10-28 → 2027-02-01 (+96d) | 2026-11-17 → 2027-02-21 (+96d) |  |
| CW | **Cabling Works** | 2026-10-28 → 2027-02-01 (+96d) | 2026-11-17 → 2027-02-21 (+96d) |  |
| CO-MV-ML-280 | Trench Excavation and Bedding Works for Medium Voltage Network for Alignment-RD-01 | 2026-10-28 → 2027-02-01 (+96d) | 2026-11-03 → 2027-02-07 (+96d) | 3d → none |
| CO-MV-ML-290 | Duct Laying Works for Medium Voltage Network for Alignment-RD-01 | 2026-11-04 → 2027-02-08 (+96d) | 2026-11-10 → 2027-02-14 (+96d) | 3d → none |
| CO-MV-ML-300 | Trench Backfilling and Compaction Works for Medium Voltage Network for Alignment-RD-01 | 2026-11-11 → 2027-02-15 (+96d) | 2026-11-17 → 2027-02-21 (+96d) | 3d → none |
| LV | **Low Voltage Network** | 2026-11-18 → 2027-02-22 (+96d) | 2026-12-16 → 2027-03-25 (+99d) |  |
| MLVC | **Main Low Voltage Cables Works ( Cable 300 MM )** | 2026-11-18 → 2027-02-22 (+96d) | 2026-12-08 → 2027-03-17 (+99d) |  |
| CON-LV-ML-130 | Trench Excavation and Bedding Works for Main Cable of Low Voltage Network for Alignment-RD-01 | 2026-11-18 → 2027-02-22 (+96d) | 2026-11-24 → 2027-02-28 (+96d) | 3d → none |
| CON-LV-ML-140 | Cable Laying Works for Main Cable of Low Voltage Network for Alignment-RD-01 | 2026-11-25 → 2027-03-01 (+96d) | 2026-12-01 → 2027-03-07 (+96d) | 3d → none |
| CON-LV-ML-150 | Trench Backfilling and Compaction Works for Main Cable of Low Voltage Network for Alignment-RD-01 | 2026-12-02 → 2027-03-08 (+96d) | 2026-12-08 → 2027-03-17 (+99d) | 6d → none |
| SLVC | **Service Low Voltage Cables Works ( Cable 70 MM )** | 2026-11-25 → 2027-03-01 (+96d) | 2026-12-16 → 2027-03-25 (+99d) |  |
| CON-LV-HC-130 | Trench Excavation and Bedding Works for Service Cable of Low Voltage Network for Alignment-RD-01 | 2026-11-25 → 2027-03-01 (+96d) | 2026-12-01 → 2027-03-07 (+96d) | 5d → none |
| CON-LV-HC-140 | Cable Laying Works for Service Cable of Low Voltage Network for Alignment-RD-01 | 2026-12-02 → 2027-03-08 (+96d) | 2026-12-09 → 2027-03-18 (+99d) | 5d → none |
| CON-LV-HC-150 | Trench Backfilling and Compaction Works for Service Cable of Low Voltage Network for Alignment-RD-01 | 2026-12-10 → 2027-03-20 (+100d) | 2026-12-16 → 2027-03-25 (+99d) | 5d → none |
| DP | **Distribution Pillars Works** | 2026-11-25 → 2027-03-01 (+96d) | 2026-12-02 → 2027-03-08 (+96d) |  |
| CON-LV-DP-130 | Foundation Excavation Works for Distribution Pillars of Low Voltage Network for Alignment-RD-01 | 2026-11-25 → 2027-03-01 (+96d) | 2026-12-02 → 2027-03-08 (+96d) | 15d → none |
| SL | **Street Lighting Network** | 2026-11-04 → 2027-02-08 (+96d) | 2026-11-30 → 2027-03-06 (+96d) |  |
| LP | **Lighting Poles Works** | 2026-11-04 → 2027-02-08 (+96d) | 2026-11-25 → 2027-03-01 (+96d) |  |
| CO-SL-LP-350 | Installation Works for Lighting Poles Foundation of Street Lighting Network for Alignment-RD-01 | 2026-11-04 → 2027-02-08 (+96d) | 2026-11-12 → 2027-02-16 (+96d) | 10d → none |
| CO-SL-LP-360 | Installation Works for Lighting Poles of Street Lighting Network for Alignment-RD-01 | 2026-11-14 → 2027-02-17 (+95d) | 2026-11-18 → 2027-02-22 (+96d) | 10d → none |
| CO-SL-LP-380 | Backfilling Works for Lighting Poles of Street Lighting Network for Alignment-RD-01 | 2026-11-19 → 2027-02-23 (+96d) | 2026-11-25 → 2027-03-01 (+96d) | 14d → none |
| CW | **Cabling Works** | 2026-11-19 → 2027-02-23 (+96d) | 2026-11-30 → 2027-03-06 (+96d) |  |
| CO-SL-CL-290 | Cable Laying Works for Street Lighting Network for Alignment-RD-01 | 2026-11-19 → 2027-02-23 (+96d) | 2026-11-24 → 2027-02-28 (+96d) | 10d → none |
| CO-SL-CL-300 | Trench Backfilling and Compaction Works for Street Lighting Network for Alignment-RD-01 | 2026-11-25 → 2027-03-01 (+96d) | 2026-11-30 → 2027-03-06 (+96d) | 10d → none |
| TE | **Telecom and Light Current Network** | 2026-12-01 → 2027-03-07 (+96d) | 2026-12-24 → 2027-04-03 (+100d) |  |
| PD | **Ducts Works** | 2026-12-17 → 2027-03-27 (+100d) | 2026-12-24 → 2027-04-03 (+100d) |  |
| CO-TE-DW-150 | Pipes Laying Works for Ducts of Telecom Network for Alignment-RD-01 | 2026-12-17 → 2027-03-27 (+100d) | 2026-12-21 → 2027-03-30 (+99d) | 5d → none |
| CO-TE-DW-160 | Trench Backfilling and Compaction Works for Ducts of Telecom Network for Alignment-RD-01 | 2026-12-22 → 2027-03-31 (+99d) | 2026-12-24 → 2027-04-03 (+100d) | 5d → none |
| MH | **Manholes Works** | 2026-12-01 → 2027-03-07 (+96d) | 2026-12-09 → 2027-03-18 (+99d) |  |
| CO-TE-MH-170 | Excavation Works for Manholes of Telecom Network for Alignment-RD-01 | 2026-12-01 → 2027-03-07 (+96d) | 2026-12-05 → 2027-03-14 (+99d) | 18d → none |
| CO-TE-MH-180 | Installation Works for Manholes of Telecom Network for Alignment-RD-01 | 2026-12-01 → 2027-03-07 (+96d) | 2026-12-05 → 2027-03-14 (+99d) | 18d → none |
| CO-TE-MH-190 | Backfilling Works for Manholes of Telecom Network for Alignment-RD-01 | 2026-12-06 → 2027-03-15 (+99d) | 2026-12-09 → 2027-03-18 (+99d) | 18d → none |
| DD | **CCTV, Telephone, MSN, ACs System Works** | 2026-12-10 → 2027-03-20 (+100d) | 2026-12-19 → 2027-03-28 (+99d) |  |
| CO-TE-CTV-150 | Installation of CCTV, Telephone, ACS and MSN Systems Cables for Alignment-RD-01 | 2026-12-10 → 2027-03-20 (+100d) | 2026-12-19 → 2027-03-28 (+99d) | 29d → none |
| RD | **Road Network** | 2026-12-26 → 2027-04-04 (+99d) | 2027-01-05 → 2027-04-14 (+99d) |  |
| LS | **Pavement Works** | 2026-12-26 → 2027-04-04 (+99d) | 2027-01-05 → 2027-04-14 (+99d) |  |
| CO-RD-PV-180 | Fixing of Curbstone for Sidewalks Pavement for Alignment-RD-01 | 2026-12-26 → 2027-04-04 (+99d) | 2027-01-05 → 2027-04-14 (+99d) | 9d → none |
| CO-RD-PV-190 | Fixing of Interlock Tiles for Sidewalks Pavement for Alignment-RD-01 | 2026-12-26 → 2027-04-04 (+99d) | 2027-01-05 → 2027-04-14 (+99d) | 17d → none |
| TS | **Traffic Signs Boards and Roads Marking** | 2026-12-26 → 2027-04-04 (+99d) | 2027-01-03 → 2027-04-12 (+99d) |  |

| ID | Task | Start | Finish | Total float |
| --- | --- | --- | --- | --- |
| CO-RD-F-RM-190 | Application of Road Marking Works For Road Works for Alignment-RD-01 | 2026-12-26 → 2027-04-04 (+99d) | 2026-12-29 → 2027-04-07 (+99d) | 29d → none |
| CO-RD-F-TS-130 | Installation Works of Traffic Signs Boards For Road Works for Alignment-RD-01 | 2026-12-30 → 2027-04-08 (+99d) | 2027-01-03 → 2027-04-12 (+99d) | 29d → none |
| 3 | **Finishes for Infrastructure Networks** | 2026-11-18 → 2027-02-22 (+96d) | 2027-01-20 → 2027-04-29 (+99d) |  |
| 11 | **Storm Drainage Network** | 2026-12-26 → 2027-04-04 (+99d) | 2027-01-20 → 2027-04-29 (+99d) |  |
| TF | **Testing and Finishes** | 2026-12-26 → 2027-04-04 (+99d) | 2027-01-20 → 2027-04-29 (+99d) |  |
| CO-SD-CB-TF-190 | Catch Basin Internal Finishes (Benching ) for Storm Drainage Network for Alignment-RD-01 | 2026-12-26 → 2027-04-04 (+99d) | 2026-12-31 → 2027-04-10 (+100d) | 5d → none |
| CO-SD-ML-TF-110 | Testing Work for Pipes of Storm Drainage Network for Alignment-RD-01 | 2027-01-02 → 2027-04-11 (+99d) | 2027-01-03 → 2027-04-12 (+99d) | 5d → none |
| CO-SD-MH-TF-230 | Testing Works for Manholes of Storm Drainage Network for Alignment-RD-01 | 2027-01-04 → 2027-04-13 (+99d) | 2027-01-05 → 2027-04-14 (+99d) | 5d → none |
| CO-SD-CB-TF-170 | Testing Works for Catch Basins of Storm Drainage Network for Alignment-RD-01 | 2027-01-06 → 2027-04-15 (+99d) | 2027-01-13 → 2027-04-22 (+99d) | 5d → none |
| CO-SD-CB-TF-180 | Install Catch Basin Cover Works for External Finishes of Storm Drainage Network for Alignment-RD-01 | 2027-01-14 → 2027-04-24 (+100d) | 2027-01-20 → 2027-04-29 (+99d) | 18d → none |
| 10 | **Sewage Network** | 2026-12-26 → 2027-04-04 (+99d) | 2027-01-02 → 2027-04-11 (+99d) |  |
| TF | **Testing and Finishes** | 2026-12-26 → 2027-04-04 (+99d) | 2027-01-02 → 2027-04-11 (+99d) |  |
| CO-SW-TF-250 | Testing Works for Main Line Manholes of Sewage Network for Alignment-RD-01 | 2026-12-26 → 2027-04-04 (+99d) | 2026-12-28 → 2027-04-06 (+99d) | 24d → none |
| CO-SW-TF-230 | Final Testing For Main Line of Sewage Network for Alignment-RD-01 | 2026-12-29 → 2027-04-07 (+99d) | 2027-01-02 → 2027-04-11 (+99d) | 24d → none |
| 9 | **Potable Water Network** | 2026-12-26 → 2027-04-04 (+99d) | 2027-01-03 → 2027-04-12 (+99d) |  |
| TF | **Testing and Finishes** | 2026-12-26 → 2027-04-04 (+99d) | 2027-01-03 → 2027-04-12 (+99d) |  |
| CO-PW-TF-140 | Fire Hydrant Finishies (S.Box + Safety + Marker Post ) of Potable Water Network for Alignment-RD-01 | 2026-12-26 → 2027-04-04 (+99d) | 2026-12-29 → 2027-04-07 (+99d) | 21d → none |
| CO-PW-TF-150 | Final Finishes works and Covers for Valves and Valve Chambers for Alignment-RD-01 | 2026-12-30 → 2027-04-08 (+99d) | 2026-12-31 → 2027-04-10 (+100d) | 21d → none |
| CO-PW-TF-220 | Testing of Potable Water Network for Alignment-RD-01 | 2027-01-02 → 2027-04-11 (+99d) | 2027-01-03 → 2027-04-12 (+99d) | 21d → none |
| 13 | **Irrigation Network** | 2027-01-04 → 2027-04-13 (+99d) | 2027-01-05 → 2027-04-14 (+99d) |  |
| TF | **Testing and Finishes** | 2027-01-04 → 2027-04-13 (+99d) | 2027-01-05 → 2027-04-14 (+99d) |  |
| CO-IR-TF-170 | Final Testing (pressure tests) of Irrigation Network for Alignment-RD-01 | 2027-01-04 → 2027-04-13 (+99d) | 2027-01-05 → 2027-04-14 (+99d) | 21d → none |
| 1 | **Treated Sewage Effluent (Tse)** | 2027-01-04 → 2027-04-13 (+99d) | 2027-01-05 → 2027-04-14 (+99d) |  |
| TF | **Testing and Finishes** | 2027-01-04 → 2027-04-13 (+99d) | 2027-01-05 → 2027-04-14 (+99d) |  |
| CO-TSE-TF-210 | Final Testing (pressure tests) of Treated Sewage Effluent (Tse) for Alignment-RD-01 | 2027-01-04 → 2027-04-13 (+99d) | 2027-01-05 → 2027-04-14 (+99d) | 31d → none |
| 14 | **Medium Voltage Network** | 2026-11-18 → 2027-02-22 (+96d) | 2026-11-19 → 2027-02-23 (+96d) |  |
| TT | **Termination and Testing Works** | 2026-11-18 → 2027-02-22 (+96d) | 2026-11-19 → 2027-02-23 (+96d) |  |
| CO-MV-TF-230 | Testing and Termination Works of Medium Voltage Network for Alignment-RD-01 | 2026-11-18 → 2027-02-22 (+96d) | 2026-11-19 → 2027-02-23 (+96d) | 25d → none |
| 6 | **Low Voltage Network** | 2026-12-17 → 2027-03-27 (+100d) | 2026-12-21 → 2027-03-30 (+99d) |  |
| TT | **Termination and Testing Works** | 2026-12-17 → 2027-03-27 (+100d) | 2026-12-21 → 2027-03-30 (+99d) |  |
| CON-LV-TT-120 | Testing and Termination Works for Substation Low Voltage Panel Boards of Low Voltage Network for Alignment-RD-01 | 2026-12-17 → 2027-03-27 (+100d) | 2026-12-21 → 2027-03-30 (+99d) | 37d → none |
| 12 | **Street Lighting Network** | 2026-12-01 → 2027-03-07 (+96d) | 2026-12-26 → 2027-04-04 (+99d) |  |
| TR | **Termination and Testing Works** | 2026-12-01 → 2027-03-07 (+96d) | 2026-12-26 → 2027-04-04 (+99d) |  |
| CO-SL-LP-370 | Installation Works for Lighting Fixtures With Drop Wire of Street Lighting Network for Alignment-RD-01 | 2026-12-01 → 2027-03-07 (+96d) | 2026-12-07 → 2027-03-16 (+99d) | 10d → none |
| CO-SL-TF-410 | Testing Works for Lighting Poles of Street Lighting Network for Alignment-RD-01 | 2026-12-23 → 2027-04-01 (+99d) | 2026-12-26 → 2027-04-04 (+99d) | 34d → none |
| ES | **Earthing System Works** | 2026-12-17 → 2027-03-27 (+100d) | 2026-12-22 → 2027-03-31 (+99d) |  |
| CO-SL-ES-240 | Install Earthing System Works for Lighting Poles of Street Lighting Network for Alignment-RD-01 | 2026-12-17 → 2027-03-27 (+100d) | 2026-12-20 → 2027-03-29 (+99d) | 28d → none |
| CO-SL-ES-250 | Install Earthing System Works for Lighting Panel Boards of Street Lighting Network for Alignment-RD-01 | 2026-12-21 → 2027-03-30 (+99d) | 2026-12-22 → 2027-03-31 (+99d) | 29d → none |
| 3 | **Telecom and Light Current Network** | 2026-12-26 → 2027-04-04 (+99d) | 2026-12-31 → 2027-04-10 (+100d) |  |
| 1 | **Testing and Finishes** | 2026-12-26 → 2027-04-04 (+99d) | 2026-12-31 → 2027-04-10 (+100d) |  |
| CO-TE-CTV-TF-180 | Testing and Interface modules with Telecom for Alignment-RD-01 | 2026-12-26 → 2027-04-04 (+99d) | 2026-12-28 → 2027-04-06 (+99d) | 21d → none |
| CO-TE-CTV-TF-310 | Testing and Interface modules with CCTV, Telephone, MSN and Access Control for Alignment-RD-01 | 2026-12-29 → 2027-04-07 (+99d) | 2026-12-31 → 2027-04-10 (+100d) | 21d → none |
| 5 | **Alignment-RD-02** | 2026-07-20 → 2026-10-25 (+97d) | 2027-02-10 → 2027-05-26 (+105d) |  |
| EW | **Earthworks** | 2026-07-20 → 2026-10-25 (+97d) | 2026-08-02 → 2026-11-07 (+97d) |  |
| EW | **Earthworks** | 2026-07-20 → 2026-10-25 (+97d) | 2026-08-02 → 2026-11-07 (+97d) |  |
| CO-EW-220 | Excavation and Backfilling Works Upto Design Level for Earthworks for Alignment-RD-02 | 2026-07-20 → 2026-10-25 (+97d) | 2026-08-02 → 2026-11-07 (+97d) | 3d → none |
| SD | **Storm Drainage Network** | 2026-08-03 → 2026-11-08 (+97d) | 2026-11-22 → 2027-02-25 (+95d) |  |
| MH | **Manholes** | 2026-08-03 → 2026-11-08 (+97d) | 2026-08-17 → 2026-11-22 (+97d) |  |
| CO-SD-MH-270 | Trench Excavation and Bedding Works for Manholes of Storm Drainage Network for Alignment-RD-02 | 2026-08-03 → 2026-11-08 (+97d) | 2026-08-06 → 2026-11-11 (+97d) | 3d → none |
| CO-SD-MH-280 | Install RC Footing Works for Manholes of Storm Drainage Network for Alignment-RD-02 | 2026-08-08 → 2026-11-12 (+96d) | 2026-08-10 → 2026-11-15 (+97d) | 3d → none |
| CO-SD-MH-290 | Install RC Wall Rings & Slab Works for Manholes of Storm Drainage Network for Alignment-RD-02 | 2026-08-11 → 2026-11-16 (+97d) | 2026-08-13 → 2026-11-18 (+97d) | 3d → none |
| CO-SD-MH-300 | Backfilling Works for Manholes of Storm Drainage Network for Alignment-RD-02 | 2026-08-15 → 2026-11-19 (+96d) | 2026-08-17 → 2026-11-22 (+97d) | 9d → none |
| ML | **Main Line Sections** | 2026-08-15 → 2026-11-19 (+96d) | 2026-08-27 → 2026-12-02 (+97d) |  |
| CO-SD-ML-170 | Trench Excavation and Bedding Works for Main Lines of Storm Drainage Network for Alignment-RD-02 | 2026-08-15 → 2026-11-19 (+96d) | 2026-08-17 → 2026-11-22 (+97d) | 3d → none |
| CO-SD-ML-180 | Pipes Laying Works for Main Lines of Storm Drainage Network for Alignment-RD-02 | 2026-08-20 → 2026-11-25 (+97d) | 2026-08-23 → 2026-11-28 (+97d) | 1d → none |
| CO-SD-ML-190 | Trench Backfilling and Compaction Works for Main Lines of Storm Drainage Network for Alignment-RD-02 | 2026-08-25 → 2026-11-30 (+97d) | 2026-08-27 → 2026-12-02 (+97d) | 0d → none |
| CB | **Catch Basin Sections** | 2026-08-29 → 2026-12-03 (+96d) | 2026-11-22 → 2027-02-25 (+95d) |  |
| CO-SD-CB-210 | Trench Excavation and Bedding Works for Catch Basins of Storm Drainage Network for Alignment-RD-02 | 2026-08-29 → 2026-12-03 (+96d) | 2026-09-17 → 2026-12-23 (+97d) | 31d → none |
| CO-SD-CB-220 | Installation and Pipes Laying Connection Works for Catch Basins of Storm Drainage Network for Alignment-RD-02 | 2026-09-19 → 2026-12-24 (+96d) | 2026-10-11 → 2027-01-14 (+95d) | 31d → none |
| CO-SD-CB-230 | Trench Backfilling and Compaction Works for Catch Basins of Storm Drainage Network for Alignment-RD-02 | 2026-11-17 → 2027-02-21 (+96d) | 2026-11-22 → 2027-02-25 (+95d) | 0d → none |
| SW | **Sewage Network** | 2026-08-29 → 2026-12-03 (+96d) | 2026-11-04 → 2027-02-08 (+96d) |  |
| 1 | **Manholes** | 2026-08-29 → 2026-12-03 (+96d) | 2026-11-04 → 2027-02-08 (+96d) |  |
| CO-SW-MH-260 | Excavation Works for Main Line Manholes of Sewage Network for Alignment-RD-02 | 2026-08-29 → 2026-12-03 (+96d) | 2026-09-09 → 2026-12-15 (+97d) | 0d → none |
| CO-SW-MH-270 | Installation RC Footing Works for Main Line Manholes of Sewage Network for Alignment-RD-02 | 2026-09-10 → 2026-12-16 (+97d) | 2026-09-22 → 2026-12-28 (+97d) | 0d → none |
| CO-SW-MH-280 | Install Grp Liner Wall Works for Main Line Manholes of Sewage Network for Alignment-RD-02 | 2026-09-24 → 2026-12-29 (+96d) | 2026-10-07 → 2027-01-11 (+96d) | 0d → none |
| CO-SW-MH-290 | Pouring Grp Liner Wall Works for Main Line Manholes of Sewage Network for Alignment-RD-02 | 2026-10-08 → 2027-01-12 (+96d) | 2026-10-21 → 2027-01-25 (+96d) | 0d → none |
| CO-SW-MH-300 | Backfilling Works for Main Line Manholes of Sewage Network for Alignment-RD-02 | 2026-10-22 → 2027-01-26 (+96d) | 2026-11-04 → 2027-02-08 (+96d) | 0d → none |
| ML | **Main Line Sections** | 2026-08-29 → 2026-12-03 (+96d) | 2026-11-04 → 2027-02-08 (+96d) |  |
| CO-SW-ML-170 | Trench Excavation and Bedding Works for Main Lines of Sewage Network for Alignment-RD-02 | 2026-08-29 → 2026-12-03 (+96d) | 2026-09-09 → 2026-12-15 (+97d) | 39d → none |
| CO-SW-ML-180 | Pipes Laying Works for Main Lines of Sewage Network for Alignment-RD-02 | 2026-09-10 → 2026-12-16 (+97d) | 2026-09-22 → 2026-12-28 (+97d) | 39d → none |

| ID | Task | Start | Finish | Total float |
| --- | --- | --- | --- | --- |
| CO-SW-ML-190 | Trench Backfilling and Compaction Works for Main Lines of Sewage Network for Alignment-RD-02 | 2026-10-24 → 2027-01-27 (+95d) | 2026-11-04 → 2027-02-08 (+96d) | 14d → none |
| TSE | **Treated Sewage Effluent (Tse)** | 2026-08-29 → 2026-12-03 (+96d) | 2026-10-15 → 2027-01-19 (+96d) |  |
| CO-TSE-ML-250 | Trench Excavation and Bedding Works for Main Lines of Treated Sewage Effluent (Tse) for Alignment-RD-02 | 2026-08-29 → 2026-12-03 (+96d) | 2026-09-10 → 2026-12-16 (+97d) | 14d → none |
| CO-TSE-ML-260 | Pipes Laying Works for Main Lines of Treated Sewage Effluent (Tse) for Alignment-RD-02 | 2026-09-12 → 2026-12-17 (+96d) | 2026-10-01 → 2027-01-05 (+96d) | 14d → none |
| CO-TSE-ML-280 | Trench Backfilling and Compaction Works for Treated Sewage Effluent (Tse) for Alignment-RD-02 | 2026-10-03 → 2027-01-06 (+95d) | 2026-10-15 → 2027-01-19 (+96d) | 14d → none |
| PW | **Potable Water Network** | 2026-10-17 → 2027-01-20 (+95d) | 2026-11-05 → 2027-02-09 (+96d) |  |
| ML | **Main Line Sections** | 2026-10-17 → 2027-01-20 (+95d) | 2026-11-04 → 2027-02-08 (+96d) |  |
| CO-PW-ML-170 | Trench Excavation and Bedding Works for Main Lines of Potable Water Network for Alignment-RD-02 | 2026-10-17 → 2027-01-20 (+95d) | 2026-10-21 → 2027-01-25 (+96d) | 14d → none |
| CO-PW-ML-180 | Pipes Laying and accessories for Main Lines of Potable Water Network for Alignment-RD-02 | 2026-10-22 → 2027-01-26 (+96d) | 2026-10-29 → 2027-02-02 (+96d) | 14d → none |
| CO-PW-ML-190 | Trench Backfilling and Compaction Works for Main Lines of Potable Water Network for Alignment-RD-02 | 2026-10-31 → 2027-02-03 (+95d) | 2026-11-04 → 2027-02-08 (+96d) | 15d → none |
| VC | **Valve Chamber** | 2026-10-17 → 2027-01-20 (+95d) | 2026-11-05 → 2027-02-09 (+96d) |  |
| CO-PW-VC-260 | Excavation Works for Main Line Valves and Valve Chambers of Potable Water Network for Alignment-RD-02 | 2026-10-17 → 2027-01-20 (+95d) | 2026-10-21 → 2027-01-25 (+96d) | 14d → none |
| CO-PW-VC200 | Installation of Valve Chambers of Potable Water Network for Alignment-RD-02 | 2026-10-22 → 2027-01-26 (+96d) | 2026-10-25 → 2027-01-28 (+95d) | 14d → none |
| CO-PW-VC-270 | Installation Works for Valves of Potable Water Network for Alignment-RD-02 | 2026-10-26 → 2027-01-30 (+96d) | 2026-10-31 → 2027-02-03 (+95d) | 14d → none |
| CO-PW-VC-280 | Backfilling Works for Main Line Valves and Valve Chambers of Potable Water Network for Alignment-RD-02 | 2026-11-01 → 2027-02-04 (+95d) | 2026-11-05 → 2027-02-09 (+96d) | 14d → none |
| FH | **Fire Hydrant** | 2026-10-22 → 2027-01-26 (+96d) | 2026-11-05 → 2027-02-09 (+96d) |  |
| CO-PW-FH-200 | Excavation Works for Fire Hydrants of Potable Water Network for Alignment-RD-02 | 2026-10-22 → 2027-01-26 (+96d) | 2026-10-25 → 2027-01-28 (+95d) | 18d → none |
| CO-PW-FH-210 | Installation Works for Fire Hydrant of Potable Water Network for Alignment-RD-02 | 2026-10-31 → 2027-02-03 (+95d) | 2026-11-02 → 2027-02-06 (+96d) | 14d → none |
| CO-PW-FH-220 | Trench Backfilling and Compaction Works for Fire Hydrants of Potable Water Network for Alignment-RD-02 | 2026-11-03 → 2027-02-07 (+96d) | 2026-11-05 → 2027-02-09 (+96d) | 14d → none |
| IR | **Irrigation Network** | 2026-10-27 → 2027-01-31 (+96d) | 2026-11-12 → 2027-02-16 (+96d) |  |
| ML | **Main Line Pipes** | 2026-10-27 → 2027-01-31 (+96d) | 2026-11-12 → 2027-02-16 (+96d) |  |
| CO-IR-ML-200 | Trench Excavation and Bedding Works for Main Lines of Irrigation Network for Alignment-RD-02 | 2026-10-27 → 2027-01-31 (+96d) | 2026-10-29 → 2027-02-02 (+96d) | 25d → none |
| CO-IR-ML-210 | Pipes Laying Works for Main Lines of Irrigation Network for Alignment-RD-02 | 2026-10-31 → 2027-02-03 (+95d) | 2026-11-02 → 2027-02-06 (+96d) | 25d → none |
| CO-IR-ML-220 | Installation Works for Main Line Valves of Irrigation Network for Alignment-RD-02 | 2026-11-03 → 2027-02-07 (+96d) | 2026-11-05 → 2027-02-09 (+96d) | 25d → none |
| CO-IR-ML-240 | Installation Works for Bulbblers And Sprinkler and Irrigation Control System of Irrigation Network for Alignment-RD-02 | 2026-11-07 → 2027-02-10 (+95d) | 2026-11-09 → 2027-02-13 (+96d) | 25d → none |
| CO-IR-ML-230 | Trench Backfilling and Compaction Works for Main Lines of Irrigation Network for Alignment-RD-02 | 2026-11-10 → 2027-02-14 (+96d) | 2026-11-12 → 2027-02-16 (+96d) | 25d → none |
| MV | **Medium Voltage Network** | 2026-11-23 → 2027-02-27 (+96d) | 2026-12-06 → 2027-03-15 (+99d) |  |
| CW | **Cabling Works** | 2026-11-23 → 2027-02-27 (+96d) | 2026-12-06 → 2027-03-15 (+99d) |  |
| CO-MV-ML-310 | Trench Excavation and Bedding Works for Medium Voltage Network for Alignment-RD-02 | 2026-11-23 → 2027-02-27 (+96d) | 2026-11-26 → 2027-03-02 (+96d) | 0d → none |
| CO-MV-ML-320 | Duct Laying Works for Medium Voltage Network for Alignment-RD-02 | 2026-11-28 → 2027-03-03 (+95d) | 2026-12-01 → 2027-03-07 (+96d) | 0d → none |
| CO-MV-ML-330 | Trench Backfilling and Compaction Works for Medium Voltage Network for Alignment-RD-02 | 2026-12-02 → 2027-03-08 (+96d) | 2026-12-06 → 2027-03-15 (+99d) | 0d → none |
| LV | **Low Voltage Network** | 2026-11-14 → 2027-02-17 (+95d) | 2026-12-28 → 2027-04-06 (+99d) |  |
| MLVC | **Main Low Voltage Cables Works ( Cable 300 MM )** | 2026-11-14 → 2027-02-17 (+95d) | 2026-12-22 → 2027-03-31 (+99d) |  |
| CON-LV-ML-170 | Cable Laying Works for Main Cable of Low Voltage Network for Alignment-RD-02 | 2026-11-14 → 2027-02-17 (+95d) | 2026-11-26 → 2027-03-02 (+96d) | 25d → none |
| CON-LV-ML-160 | Trench Excavation and Bedding Works for Main Cable of Low Voltage Network for Alignment-RD-02 | 2026-12-07 → 2027-03-16 (+99d) | 2026-12-12 → 2027-03-21 (+99d) | 0d → none |
| CON-LV-ML-180 | Trench Backfilling and Compaction Works for Main Cable of Low Voltage Network for Alignment-RD-02 | 2026-12-13 → 2027-03-22 (+99d) | 2026-12-22 → 2027-03-31 (+99d) | 9d → none |
| SLVC | **Service Low Voltage Cables Works ( Cable 70 MM )** | 2026-12-13 → 2027-03-22 (+99d) | 2026-12-28 → 2027-04-06 (+99d) |  |
| CON-LV-HC-160 | Trench Excavation and Bedding Works for Service Cable of Low Voltage Network for Alignment-RD-02 | 2026-12-13 → 2027-03-22 (+99d) | 2026-12-16 → 2027-03-25 (+99d) | 8d → none |
| CON-LV-HC-170 | Cable Laying Works for Service Cable of Low Voltage Network for Alignment-RD-02 | 2026-12-17 → 2027-03-27 (+100d) | 2026-12-23 → 2027-04-01 (+99d) | 8d → none |
| CON-LV-HC-180 | Trench Backfilling and Compaction Works for Service Cable of Low Voltage Network for Alignment-RD-02 | 2026-12-24 → 2027-04-03 (+100d) | 2026-12-28 → 2027-04-06 (+99d) | 8d → none |
| DP | **Distribution Pillars Works** | 2026-12-07 → 2027-03-16 (+99d) | 2026-12-22 → 2027-03-31 (+99d) |  |
| CON-LV-DP-160 | Foundation Excavation Works for Distribution Pillars of Low Voltage Network for Alignment-RD-02 | 2026-12-07 → 2027-03-16 (+99d) | 2026-12-13 → 2027-03-22 (+99d) | 0d → none |
| CON-LV-DP-170 | Pouring Plain Concrete For Distribution Pillar Units of Low Voltage Network for Alignment-RD-02 | 2026-12-14 → 2027-03-23 (+99d) | 2026-12-17 → 2027-03-27 (+100d) | 20d → none |
| CON-LV-DP-180 | Installation Works for Distribution Pillar Units of Low Voltage Network for Alignment-RD-02 | 2026-12-19 → 2027-03-28 (+99d) | 2026-12-22 → 2027-03-31 (+99d) | 20d → none |
| SL | **Street Lighting Network** | 2026-12-14 → 2027-03-23 (+99d) | 2027-01-06 → 2027-04-15 (+99d) |  |
| LP | **Lighting Poles Works** | 2026-12-14 → 2027-03-23 (+99d) | 2026-12-26 → 2027-04-04 (+99d) |  |
| CO-SL-LP-400 | Installation Works for Lighting Poles Foundation of Street Lighting Network for Alignment-RD-02 | 2026-12-14 → 2027-03-23 (+99d) | 2026-12-17 → 2027-03-27 (+100d) | 0d → none |
| CO-SL-LP-410 | Installation Works for Lighting Poles of Street Lighting Network for Alignment-RD-02 | 2026-12-19 → 2027-03-28 (+99d) | 2026-12-22 → 2027-03-31 (+99d) | 0d → none |
| CO-SL-LP-430 | Backfilling Works for Lighting Poles of Street Lighting Network for Alignment-RD-02 | 2026-12-23 → 2027-04-01 (+99d) | 2026-12-26 → 2027-04-04 (+99d) | 0d → none |
| CW | **Cabling Works** | 2026-12-14 → 2027-03-23 (+99d) | 2026-12-21 → 2027-03-30 (+99d) |  |
| CO-SL-CL-320 | Cable Laying Works for Street Lighting Network for Alignment-RD-02 | 2026-12-14 → 2027-03-23 (+99d) | 2026-12-17 → 2027-03-27 (+100d) | 4d → none |
| CO-SL-CL-330 | Trench Backfilling and Compaction Works for Street Lighting Network for Alignment-RD-02 | 2026-12-19 → 2027-03-28 (+99d) | 2026-12-21 → 2027-03-30 (+99d) | 4d → none |
| DPB | **Distrubution Panel Boards** | 2026-12-27 → 2027-04-05 (+99d) | 2027-01-06 → 2027-04-15 (+99d) |  |
| CO-SL-DB-330 | Installation Works for Panel Board Concrete Foundations of Street Lighting Network for Alignment-RD-02 | 2026-12-27 → 2027-04-05 (+99d) | 2026-12-29 → 2027-04-07 (+99d) | 0d → none |
| CO-SL-DB-340 | Installation Works for Lighting Panel Boards of Street Lighting Network for Alignment-RD-02 | 2026-12-30 → 2027-04-08 (+99d) | 2027-01-06 → 2027-04-15 (+99d) | 0d → none |
| TE | **Telecom and Light Current Network** | 2026-12-07 → 2027-03-16 (+99d) | 2027-01-18 → 2027-04-27 (+99d) |  |
| PD | **Ducts Works** | 2027-01-07 → 2027-04-17 (+100d) | 2027-01-18 → 2027-04-27 (+99d) |  |
| CO-TE-DW-190 | Pipes Laying Works for Ducts of Telecom Network for Alignment-RD-02 | 2027-01-07 → 2027-04-17 (+100d) | 2027-01-12 → 2027-04-21 (+99d) | 0d → none |
| CO-TE-DW-200 | Trench Backfilling and Compaction Works for Ducts of Telecom Network for Alignment-RD-02 | 2027-01-13 → 2027-04-22 (+99d) | 2027-01-18 → 2027-04-27 (+99d) | 0d → none |
| MH | **Manholes Works** | 2026-12-07 → 2027-03-16 (+99d) | 2026-12-16 → 2027-03-25 (+99d) |  |
| CO-TE-MH-200 | Excavation Works for Manholes of Telecom Network for Alignment-RD-02 | 2026-12-07 → 2027-03-16 (+99d) | 2026-12-09 → 2027-03-18 (+99d) | 25d → none |
| CO-TE-MH-210 | Installation Works for Manholes of Telecom Network for Alignment-RD-02 | 2026-12-10 → 2027-03-20 (+100d) | 2026-12-13 → 2027-03-22 (+99d) | 25d → none |
| CO-TE-MH-220 | Backfilling Works for Manholes of Telecom Network for Alignment-RD-02 | 2026-12-14 → 2027-03-23 (+99d) | 2026-12-16 → 2027-03-25 (+99d) | 25d → none |
| DD | **CCTV, Telephone, MSN, ACs System Works** | 2026-12-17 → 2027-03-27 (+100d) | 2026-12-23 → 2027-04-01 (+99d) |  |
| CO-TE-CTV-180 | Installation of CCTV, Telephone, ACS and MSN Systems Cables for Alignment-RD-02 | 2026-12-17 → 2027-03-27 (+100d) | 2026-12-23 → 2027-04-01 (+99d) | 36d → none |
| RD | **Road Works** | 2026-12-29 → 2027-04-07 (+99d) | 2027-01-27 → 2027-05-06 (+99d) |  |
| LS | **Pavement Works** | 2026-12-29 → 2027-04-07 (+99d) | 2027-01-13 → 2027-04-22 (+99d) |  |
| CO-RD-PV-200 | Fixing of Curbstone for Sidewalks Pavement for Alignment-RD-02 | 2026-12-29 → 2027-04-07 (+99d) | 2027-01-03 → 2027-04-12 (+99d) | 15d → none |
| CO-RD-PV-210 | Fixing of Interlock Tiles for Sidewalks Pavement for Alignment-RD-02 | 2027-01-04 → 2027-04-13 (+99d) | 2027-01-13 → 2027-04-22 (+99d) | 15d → none |
| TS | **Traffic Signs Boards and Roads Marking** | 2027-01-19 → 2027-04-28 (+99d) | 2027-01-27 → 2027-05-06 (+99d) |  |

| ID | Task | Start | Finish | Total float |
| --- | --- | --- | --- | --- |
| CO-RD-F-RM-200 | Application of Road Marking Works For Road Works for Alignment-RD-02 | 2027-01-19 → 2027-04-28 (+99d) | 2027-01-23 → 2027-05-02 (+99d) | 11d → none |
| CO-RD-F-TS-140 | Installation Works of Traffic Signs Boards For Road Works for Alignment-RD-02 | 2027-01-24 → 2027-05-03 (+99d) | 2027-01-27 → 2027-05-06 (+99d) | 11d → none |
| 3 | **Finishes for Infrastructure Networks** | 2026-12-07 → 2027-03-16 (+99d) | 2027-02-10 → 2027-05-26 (+105d) |  |
| 11 | **Storm Drainage Network** | 2027-01-07 → 2027-04-17 (+100d) | 2027-02-10 → 2027-05-26 (+105d) |  |
| TF | **Testing and Finishes** | 2027-01-07 → 2027-04-17 (+100d) | 2027-02-10 → 2027-05-26 (+105d) |  |
| CO-SD-ML-TF-120 | Testing Work for Pipes of Storm Drainage Network for Alignment-RD-02 | 2027-01-07 → 2027-04-17 (+100d) | 2027-01-13 → 2027-04-22 (+99d) | 10d → none |
| CO-SD-CB-TF-220 | Catch Basin Internal Finishes (Benching ) for Storm Drainage Network for Alignment-RD-02 | 2027-01-19 → 2027-04-28 (+99d) | 2027-01-25 → 2027-05-04 (+99d) | 0d → none |
| CO-SD-MH-TF-250 | Testing Works for Manholes of Storm Drainage Network for Alignment-RD-02 | 2027-01-19 → 2027-04-28 (+99d) | 2027-01-25 → 2027-05-04 (+99d) | 14d → none |
| CO-SD-CB-TF-200 | Testing Works for Catch Basins of Storm Drainage Network for Alignment-RD-02 | 2027-01-26 → 2027-05-05 (+99d) | 2027-02-01 → 2027-05-11 (+99d) | 0d → none |
| CO-SD-CB-TF-210 | Install Catch Basin Cover Works for External Finishes of Storm Drainage Network for Alignment-RD-02 | 2027-02-02 → 2027-05-12 (+99d) | 2027-02-10 → 2027-05-26 (+105d) | 0d → none |
| 10 | **Sewage Network** | 2026-12-26 → 2027-04-04 (+99d) | 2027-01-14 → 2027-04-24 (+100d) |  |
| TF | **Testing and Finishes** | 2026-12-26 → 2027-04-04 (+99d) | 2027-01-14 → 2027-04-24 (+100d) |  |
| CO-SW-TF-270 | Final Testing For Main Line of Sewage Network for Alignment-RD-02 | 2026-12-26 → 2027-04-04 (+99d) | 2027-01-14 → 2027-04-24 (+100d) | 23d → none |
| CO-SW-TF-290 | Testing Works for Main Line Manholes of Sewage Network for Alignment-RD-02 | 2026-12-26 → 2027-04-04 (+99d) | 2027-01-14 → 2027-04-24 (+100d) | 23d → none |
| 9 | **Potable Water Network** | 2026-12-22 → 2027-03-31 (+99d) | 2027-01-25 → 2027-05-04 (+99d) |  |
| TF | **Testing and Finishes** | 2026-12-22 → 2027-03-31 (+99d) | 2027-01-25 → 2027-05-04 (+99d) |  |
| CO-PW-TF-170 | Fire Hydrant Finishies (S.Box + Safety + Marker Post ) of Potable Water Network for Alignment-RD-02 | 2026-12-22 → 2027-03-31 (+99d) | 2027-01-06 → 2027-04-15 (+99d) | 14d → none |
| CO-PW-TF-180 | Final Finishes works and Covers for Valves and Valve Chambers for Alignment-RD-02 | 2027-01-07 → 2027-04-17 (+100d) | 2027-01-16 → 2027-04-25 (+99d) | 14d → none |
| CO-PW-TF-160 | Testing of Potable Water Network for Alignment-RD-02 | 2027-01-17 → 2027-04-26 (+99d) | 2027-01-25 → 2027-05-04 (+99d) | 14d → none |
| 13 | **Irrigation Network** | 2027-01-03 → 2027-04-12 (+99d) | 2027-01-06 → 2027-04-15 (+99d) |  |
| TF | **Testing and Finishes** | 2027-01-03 → 2027-04-12 (+99d) | 2027-01-06 → 2027-04-15 (+99d) |  |
| CO-IR-TF-180 | Final Testing (pressure tests) of Irrigation Network for Alignment-RD-02 | 2027-01-03 → 2027-04-12 (+99d) | 2027-01-06 → 2027-04-15 (+99d) | 30d → none |
| 1 | **Treated Sewage Effluent (Tse)** | 2027-01-18 → 2027-04-27 (+99d) | 2027-01-24 → 2027-05-03 (+99d) |  |
| TF | **Testing and Finishes** | 2027-01-18 → 2027-04-27 (+99d) | 2027-01-24 → 2027-05-03 (+99d) |  |
| CO-TSE-TF-190 | Final Testing (pressure tests) of Treated Sewage Effluent (Tse) for Alignment-RD-02 | 2027-01-18 → 2027-04-27 (+99d) | 2027-01-24 → 2027-05-03 (+99d) | 15d → none |
| 14 | **Medium Voltage Network** | 2026-12-07 → 2027-03-16 (+99d) | 2026-12-13 → 2027-03-22 (+99d) |  |
| TT | **Termination and Testing Works** | 2026-12-07 → 2027-03-16 (+99d) | 2026-12-13 → 2027-03-22 (+99d) |  |
| CO-MV-TF-240 | Testing and Termination Works of Medium Voltage Network for Alignment-RD-02 | 2026-12-07 → 2027-03-16 (+99d) | 2026-12-13 → 2027-03-22 (+99d) | 11d → none |
| 6 | **Low Voltage Network** | 2026-12-27 → 2027-04-05 (+99d) | 2027-01-04 → 2027-04-13 (+99d) |  |
| TT | **Termination and Testing Works** | 2026-12-27 → 2027-04-05 (+99d) | 2027-01-04 → 2027-04-13 (+99d) |  |
| CON-LV-TT-150 | Testing and Termination Works for Distribution Pillars Units of Low Voltage Network for Alignment-RD-02 | 2026-12-27 → 2027-04-05 (+99d) | 2026-12-30 → 2027-04-08 (+99d) | 32d → none |
| CON-LV-TT-140 | Testing and Termination Works for Substation Low Voltage Panel Boards of Low Voltage Network for Alignment-RD-02 | 2026-12-31 → 2027-04-10 (+100d) | 2027-01-04 → 2027-04-13 (+99d) | 32d → none |
| 1 | **Earthing System Works** | 2026-12-31 → 2027-04-10 (+100d) | 2027-01-02 → 2027-04-11 (+99d) |  |
| CON-LV-ES-120 | Earthing System Works for Distribution Pillars Units of Low Voltage Network for Alignment-RD-02 | 2026-12-31 → 2027-04-10 (+100d) | 2027-01-02 → 2027-04-11 (+99d) | 34d → none |
| 12 | **Street Lighting Network** | 2026-12-30 → 2027-04-08 (+99d) | 2027-01-17 → 2027-04-26 (+99d) |  |
| TR | **Termination and Testing Works** | 2026-12-30 → 2027-04-08 (+99d) | 2027-01-17 → 2027-04-26 (+99d) |  |
| CO-SL-LP-420 | Installation Works for Lighting Fixtures With Drop Wire of Street Lighting Network for Alignment-RD-02 | 2026-12-30 → 2027-04-08 (+99d) | 2026-12-31 → 2027-04-10 (+100d) | 21d → none |
| CO-SL-TF-440 | Termination Works For Panel Board Cables of Street Lighting Network for Alignment-RD-02 | 2027-01-07 → 2027-04-17 (+100d) | 2027-01-13 → 2027-04-22 (+99d) | 24d → none |
| CO-SL-TF-450 | Testing Works for Lighting Poles of Street Lighting Network for Alignment-RD-02 | 2027-01-16 → 2027-04-25 (+99d) | 2027-01-17 → 2027-04-26 (+99d) | 21d → none |
| CO-SL-TF-460 | Testing Works For Panel Board Cables of Street Lighting Network for Alignment-RD-02 | 2027-01-16 → 2027-04-25 (+99d) | 2027-01-17 → 2027-04-26 (+99d) | 21d → none |
| ES | **Earthing System Works** | 2027-01-02 → 2027-04-11 (+99d) | 2027-01-14 → 2027-04-24 (+100d) |  |
| CO-SL-ES-260 | Install Earthing System Works for Lighting Poles of Street Lighting Network for Alignment-RD-02 | 2027-01-02 → 2027-04-11 (+99d) | 2027-01-07 → 2027-04-17 (+100d) | 21d → none |
| CO-SL-ES-270 | Install Earthing System Works for Lighting Panel Boards of Street Lighting Network for Alignment-RD-02 | 2027-01-09 → 2027-04-18 (+99d) | 2027-01-14 → 2027-04-24 (+100d) | 21d → none |
| 3 | **Telecom and Light Current Network** | 2026-12-31 → 2027-04-10 (+100d) | 2027-01-06 → 2027-04-15 (+99d) |  |
| 1 | **Testing and Finishes** | 2026-12-31 → 2027-04-10 (+100d) | 2027-01-06 → 2027-04-15 (+99d) |  |
| CO-TE-CTV-TF-220 | Testing and Interface modules with Telecom for Alignment-RD-02 | 2026-12-31 → 2027-04-10 (+100d) | 2027-01-03 → 2027-04-12 (+99d) | 30d → none |
| CO-TE-CTV-TF-350 | Testing and Interface modules with CCTV, Telephone, MSN and Access Control for Alignment-RD-02 | 2027-01-04 → 2027-04-13 (+99d) | 2027-01-06 → 2027-04-15 (+99d) | 30d → none |
| 3 | **Alignment-RD-03-1** | 2026-06-23 → 2026-09-28 (+97d) | 2027-01-10 → 2027-04-19 (+99d) |  |
| EW | **Earthworks** | 2026-06-23 → 2026-09-28 (+97d) | 2026-07-06 → 2026-10-11 (+97d) |  |
| EW | **Earthworks** | 2026-06-23 → 2026-09-28 (+97d) | 2026-07-06 → 2026-10-11 (+97d) |  |
| CO-EW-200 | Excavation and Backfilling Works Upto Design Level for Earthworks for Alignment-RD-03-1 | 2026-06-23 → 2026-09-28 (+97d) | 2026-07-06 → 2026-10-11 (+97d) | 3d → none |
| SD | **Storm Drainage Network** | 2026-07-07 → 2026-10-12 (+97d) | 2026-08-20 → 2026-11-25 (+97d) |  |
| MH | **Manholes** | 2026-07-07 → 2026-10-12 (+97d) | 2026-08-13 → 2026-11-18 (+97d) |  |
| CO-SD-MH-180 | Trench Excavation and Bedding Works for Manholes of Storm Drainage Network for Alignment-RD-03-1 | 2026-07-07 → 2026-10-12 (+97d) | 2026-07-18 → 2026-10-22 (+96d) | 6d → none |
| CO-SD-MH-190 | Install RC Footing Works for Manholes of Storm Drainage Network for Alignment-RD-03-1 | 2026-07-19 → 2026-10-24 (+97d) | 2026-07-21 → 2026-10-26 (+97d) | 6d → none |
| CO-SD-MH-200 | Install RC Wall Rings & Slab Works for Manholes of Storm Drainage Network for Alignment-RD-03-1 | 2026-07-22 → 2026-10-27 (+97d) | 2026-08-02 → 2026-11-07 (+97d) | 6d → none |
| CO-SD-MH-220 | Backfilling Works for Manholes of Storm Drainage Network for Alignment-RD-03-1 | 2026-08-03 → 2026-11-08 (+97d) | 2026-08-13 → 2026-11-18 (+97d) | 6d → none |
| ML | **Main Line Sections** | 2026-08-03 → 2026-11-08 (+97d) | 2026-08-20 → 2026-11-25 (+97d) |  |
| CO-SD-ML-100 | Trench Excavation and Bedding Works for Main Lines of Storm Drainage Network for Alignment-RD-03-1 | 2026-08-03 → 2026-11-08 (+97d) | 2026-08-05 → 2026-11-10 (+97d) | 6d → none |
| CO-SD-ML-120 | Pipes Laying Works for Main Lines of Storm Drainage Network for Alignment-RD-03-1 | 2026-08-13 → 2026-11-18 (+97d) | 2026-08-16 → 2026-11-21 (+97d) | 0d → none |
| CO-SD-ML-130 | Trench Backfilling and Compaction Works for Main Lines of Storm Drainage Network for Alignment-RD-03-1 | 2026-08-17 → 2026-11-22 (+97d) | 2026-08-20 → 2026-11-25 (+97d) | 0d → none |
| TSE | **Treated Sewage Effluent (Tse)** | 2026-08-24 → 2026-11-29 (+97d) | 2027-01-09 → 2027-04-18 (+99d) |  |
| CO-TSE-ML-150 | Trench Excavation and Bedding Works for Main Lines of Treated Sewage Effluent (Tse) for Alignment-RD-03-1 | 2026-08-24 → 2026-11-29 (+97d) | 2026-08-27 → 2026-12-02 (+97d) | 18d → none |
| CO-TSE-ML-160 | Pipes Laying Works for Main Lines of Treated Sewage Effluent (Tse) for Alignment-RD-03-1 | 2026-08-29 → 2026-12-03 (+96d) | 2026-09-01 → 2026-12-07 (+97d) | 18d → none |
| CO-TSE-ML-170 | Installation Works for Main Line Valves of Treated Sewage Effluent (Tse) for Alignment-RD-03-1 | 2026-09-02 → 2026-12-08 (+97d) | 2026-09-08 → 2026-12-14 (+97d) | 18d → none |
| CO-TSE-ML-190 | Installation Works for Valve and Washout Chambers of Treated Sewage Effluent (Tse) for Alignment-RD-03-1 | 2026-09-09 → 2026-12-15 (+97d) | 2026-09-15 → 2026-12-21 (+97d) | 18d → none |
| CO-TSE-ML-180 | Trench Backfilling and Compaction Works for Treated Sewage Effluent (Tse) for Alignment-RD-03-1 | 2026-09-16 → 2026-12-22 (+97d) | 2026-09-21 → 2026-12-27 (+97d) | 18d → none |
| TA | **Treated Sewage Effluent (Tse) Storage Tank** | 2027-01-03 → 2027-04-12 (+99d) | 2027-01-09 → 2027-04-18 (+99d) |  |
| CO-TSE-TF-180 | Installation of Storage Tank of Treated Sewage Effluent (Tse) for Alignment-RD-03-1 | 2027-01-03 → 2027-04-12 (+99d) | 2027-01-09 → 2027-04-18 (+99d) | 15d → none |
| PW | **Potable Water Network** | 2026-09-22 → 2026-12-28 (+97d) | 2027-01-02 → 2027-04-11 (+99d) |  |

| ID | Task | Start | Finish | Total float |
| --- | --- | --- | --- | --- |
| ML | **Main Line Sections** | 2026-09-22 → 2026-12-28 (+97d) | 2026-10-19 → 2027-01-23 (+96d) |  |
| CO-PW-ML-100 | Trench Excavation and Bedding Works for Main Lines of Potable Water Network for Alignment-RD-03-1 | 2026-09-22 → 2026-12-28 (+97d) | 2026-09-28 → 2027-01-02 (+96d) | 18d → none |
| CO-PW-ML-110 | Pipes Laying and accessories for Main Lines of Potable Water Network for Alignment-RD-03-1 | 2026-10-06 → 2027-01-10 (+96d) | 2026-10-11 → 2027-01-14 (+95d) | 12d → none |
| CO-PW-ML-130 | Trench Backfilling and Compaction Works for Main Lines of Potable Water Network for Alignment-RD-03-1 | 2026-10-12 → 2027-01-16 (+96d) | 2026-10-19 → 2027-01-23 (+96d) | 12d → none |
| VC | **Valve Chamber** | 2026-09-26 → 2026-12-30 (+95d) | 2026-11-05 → 2027-02-09 (+96d) |  |
| CO-PW-VC-170 | Excavation Works for Main Line Valves and Valve Chambers of Potable Water Network for Alignment-RD-03-1 | 2026-09-26 → 2026-12-30 (+95d) | 2026-09-28 → 2027-01-02 (+96d) | 32d → none |
| CO-PW-VC180 | Installation of Valve Chambers of Potable Water Network for Alignment-RD-03-1 | 2026-10-03 → 2027-01-06 (+95d) | 2026-10-05 → 2027-01-09 (+96d) | 29d → none |
| CO-PW-VC-190 | Installation Works for Valves of Potable Water Network for Alignment-RD-03-1 | 2026-10-31 → 2027-02-03 (+95d) | 2026-11-02 → 2027-02-06 (+96d) | 8d → none |
| CO-PW-VC-220 | Backfilling Works for Main Line Valves and Valve Chambers of Potable Water Network for Alignment-RD-03-1 | 2026-11-03 → 2027-02-07 (+96d) | 2026-11-05 → 2027-02-09 (+96d) | 8d → none |
| FH | **Fire Hydrant** | 2026-09-29 → 2027-01-03 (+96d) | 2026-11-05 → 2027-02-09 (+96d) |  |
| CO-PW-FH-140 | Excavation Works for Fire Hydrants of Potable Water Network for Alignment-RD-03-1 | 2026-09-29 → 2027-01-03 (+96d) | 2026-09-30 → 2027-01-04 (+96d) | 35d → none |
| CO-PW-FH-150 | Installation Works for Fire Hydrant of Potable Water Network for Alignment-RD-03-1 | 2026-10-12 → 2027-01-16 (+96d) | 2026-10-13 → 2027-01-17 (+96d) | 26d → none |
| CO-PW-FH-160 | Trench Backfilling and Compaction Works for Fire Hydrants of Potable Water Network for Alignment-RD-03-1 | 2026-11-04 → 2027-02-08 (+96d) | 2026-11-05 → 2027-02-09 (+96d) | 8d → none |
| TA | **Potable Water Network Storage Tank** | 2026-12-27 → 2027-04-05 (+99d) | 2027-01-02 → 2027-04-11 (+99d) |  |
| CO-PW-TF-130 | Installation of Storage Tank of Potable Water Network for Alignment-RD-03-1 | 2026-12-27 → 2027-04-05 (+99d) | 2027-01-02 → 2027-04-11 (+99d) | 15d → none |
| LV | **Low Voltage Network** | 2026-10-20 → 2027-01-24 (+96d) | 2026-12-06 → 2027-03-15 (+99d) |  |
| MLVC | **Main Low Voltage Cables Works ( Cable 300 MM )** | 2026-10-20 → 2027-01-24 (+96d) | 2026-11-10 → 2027-02-14 (+96d) |  |
| CON-LV-ML-100 | Trench Excavation and Bedding Works for Main Cable of Low Voltage Network for Alignment-RD-03-1 | 2026-10-20 → 2027-01-24 (+96d) | 2026-10-28 → 2027-02-01 (+96d) | 12d → none |
| CON-LV-ML-110 | Cable Laying Works for Main Cable of Low Voltage Network for Alignment-RD-03-1 | 2026-10-29 → 2027-02-02 (+96d) | 2026-11-05 → 2027-02-09 (+96d) | 12d → none |
| CON-LV-ML-120 | Trench Backfilling and Compaction Works for Main Cable of Low Voltage Network for Alignment-RD-03-1 | 2026-11-07 → 2027-02-10 (+95d) | 2026-11-10 → 2027-02-14 (+96d) | 15d → none |
| SLVC | **Service Low Voltage Cables Works ( Cable 70 MM )** | 2026-11-07 → 2027-02-10 (+95d) | 2026-11-22 → 2027-02-25 (+95d) |  |
| CON-LV-HC-100 | Trench Excavation and Bedding Works for Service Cable of Low Voltage Network for Alignment-RD-03-1 | 2026-11-07 → 2027-02-10 (+95d) | 2026-11-10 → 2027-02-14 (+96d) | 8d → none |
| CON-LV-HC-110 | Cable Laying Works for Service Cable of Low Voltage Network for Alignment-RD-03-1 | 2026-11-11 → 2027-02-15 (+96d) | 2026-11-18 → 2027-02-22 (+96d) | 8d → none |
| CON-LV-HC-120 | Trench Backfilling and Compaction Works for Service Cable of Low Voltage Network for Alignment-RD-03-1 | 2026-11-19 → 2027-02-23 (+96d) | 2026-11-22 → 2027-02-25 (+95d) | 8d → none |
| DP | **Distribution Pillars Works** | 2026-11-23 → 2027-02-27 (+96d) | 2026-12-06 → 2027-03-15 (+99d) |  |
| CON-LV-DP-100 | Foundation Excavation Works for Distribution Pillars of Low Voltage Network for Alignment-RD-03-1 | 2026-11-23 → 2027-02-27 (+96d) | 2026-11-26 → 2027-03-02 (+96d) | 8d → none |
| CON-LV-DP-110 | Pouring Plain Concrete For Distribution Pillar Units of Low Voltage Network for Alignment-RD-03-1 | 2026-11-28 → 2027-03-03 (+95d) | 2026-12-01 → 2027-03-07 (+96d) | 8d → none |
| CON-LV-DP-120 | Installation Works for Distribution Pillar Units of Low Voltage Network for Alignment-RD-03-1 | 2026-12-02 → 2027-03-08 (+96d) | 2026-12-06 → 2027-03-15 (+99d) | 8d → none |
| SL | **Street Lighting Network** | 2026-11-10 → 2027-02-14 (+96d) | 2026-12-02 → 2027-03-08 (+96d) |  |
| LP | **Lighting Poles Works** | 2026-11-10 → 2027-02-14 (+96d) | 2026-11-28 → 2027-03-03 (+95d) |  |
| CO-SL-LP-550 | Installation Works for Lighting Poles Foundation of Street Lighting Network for Alignment-RD-03-1 | 2026-11-10 → 2027-02-14 (+96d) | 2026-11-15 → 2027-02-18 (+95d) | 3d → none |
| CO-SL-LP-560 | Installation Works for Lighting Poles of Street Lighting Network for Alignment-RD-03-1 | 2026-11-16 → 2027-02-20 (+96d) | 2026-11-21 → 2027-02-24 (+95d) | 3d → none |
| CO-SL-LP-570 | Backfilling Works for Lighting Poles of Street Lighting Network for Alignment-RD-03-1 | 2026-11-22 → 2027-02-25 (+95d) | 2026-11-28 → 2027-03-03 (+95d) | 7d → none |
| CW | **Cabling Works** | 2026-11-22 → 2027-02-25 (+95d) | 2026-12-02 → 2027-03-08 (+96d) |  |
| CO-SL-CL-410 | Cable Laying Works for Street Lighting Network for Alignment-RD-03-1 | 2026-11-22 → 2027-02-25 (+95d) | 2026-11-26 → 2027-03-02 (+96d) | 3d → none |
| CO-SL-CL-420 | Trench Backfilling and Compaction Works for Street Lighting Network for Alignment-RD-03-1 | 2026-11-28 → 2027-03-03 (+95d) | 2026-12-02 → 2027-03-08 (+96d) | 3d → none |
| TE | **Telecom and Light Current Network** | 2026-11-29 → 2027-03-04 (+95d) | 2026-12-12 → 2027-03-21 (+99d) |  |
| PD | **Ducts Works** | 2026-12-03 → 2027-03-13 (+100d) | 2026-12-12 → 2027-03-21 (+99d) |  |
| CO-TE-DW-110 | Pipes Laying Works for Ducts of Telecom Network for Alignment-RD-03-1 | 2026-12-03 → 2027-03-13 (+100d) | 2026-12-07 → 2027-03-16 (+99d) | 3d → none |
| CO-TE-DW-130 | Trench Backfilling and Compaction Works for Ducts of Telecom Network for Alignment-RD-03-1 | 2026-12-08 → 2027-03-17 (+99d) | 2026-12-12 → 2027-03-21 (+99d) | 3d → none |
| MH | **Manholes Works** | 2026-11-29 → 2027-03-04 (+95d) | 2026-12-05 → 2027-03-14 (+99d) |  |
| CO-TE-MH-140 | Excavation Works for Manholes of Telecom Network for Alignment-RD-03-1 | 2026-11-29 → 2027-03-04 (+95d) | 2026-11-30 → 2027-03-06 (+96d) | 9d → none |
| CO-TE-MH-150 | Installation Works for Manholes of Telecom Network for Alignment-RD-03-1 | 2026-12-01 → 2027-03-07 (+96d) | 2026-12-02 → 2027-03-08 (+96d) | 9d → none |
| CO-TE-MH-160 | Backfilling Works for Manholes of Telecom Network for Alignment-RD-03-1 | 2026-12-03 → 2027-03-13 (+100d) | 2026-12-05 → 2027-03-14 (+99d) | 9d → none |
| DD | **CCTV, Telephone, MSN, ACs System Works** | 2026-12-06 → 2027-03-15 (+99d) | 2026-12-09 → 2027-03-18 (+99d) |  |
| CO-TE-CTV-110 | Installation of CCTV, Telephone, ACS and MSN Systems Cables for Alignment-RD-03-1 | 2026-12-06 → 2027-03-15 (+99d) | 2026-12-09 → 2027-03-18 (+99d) | 30d → none |
| RD | **Road Works** | 2026-12-13 → 2027-03-22 (+99d) | 2027-01-06 → 2027-04-15 (+99d) |  |
| RD | **Pre-Bituminous Construction** | 2026-12-13 → 2027-03-22 (+99d) | 2026-12-28 → 2027-04-06 (+99d) |  |
| CO-RD-PB-140 | Subgrade Layer for Road Works for Alignment-RD-03-1 | 2026-12-13 → 2027-03-22 (+99d) | 2026-12-20 → 2027-03-29 (+99d) | 3d → none |
| CO-RD-PB-150 | Aggregate Base Course Layer for Road Works for Alignment-RD-03-1 | 2026-12-21 → 2027-03-30 (+99d) | 2026-12-28 → 2027-04-06 (+99d) | 29d → none |
| 1 | **Bituminous Construction** | 2026-12-21 → 2027-03-30 (+99d) | 2026-12-28 → 2027-04-06 (+99d) |  |
| CO-RD-B-160 | Bituminous Base Courses Layers for Road Works for Alignment-RD-03-1 | 2026-12-21 → 2027-03-30 (+99d) | 2026-12-22 → 2027-03-31 (+99d) | 29d → none |
| CON-RD-MR-150 | Preparation of Asphaltic Wearing Course Layer for Roads Network for Alignment-RD-03-1 | 2026-12-27 → 2027-04-05 (+99d) | 2026-12-28 → 2027-04-06 (+99d) | 29d → none |
| LS | **Pavement Works** | 2026-12-23 → 2027-04-01 (+99d) | 2027-01-06 → 2027-04-15 (+99d) |  |
| CO-RD-PV-160 | Fixing of Curbstone for Sidewalks Pavement for Alignment-RD-03-1 | 2026-12-23 → 2027-04-01 (+99d) | 2026-12-28 → 2027-04-06 (+99d) | 29d → none |
| CO-RD-PV-170 | Fixing of Interlock Tiles for Sidewalks Pavement for Alignment-RD-03-1 | 2026-12-29 → 2027-04-07 (+99d) | 2027-01-06 → 2027-04-15 (+99d) | 29d → none |
| TS | **Traffic Signs Boards and Roads Marking** | 2026-12-29 → 2027-04-07 (+99d) | 2027-01-02 → 2027-04-11 (+99d) |  |
| CO-RD-F-RM-180 | Application of Road Marking Works For Road Works for Alignment-RD-03-1 | 2026-12-29 → 2027-04-07 (+99d) | 2026-12-30 → 2027-04-08 (+99d) | 29d → none |
| CO-RD-F-TS-120 | Installation Works of Traffic Signs Boards For Road Works for Alignment-RD-03-1 | 2026-12-31 → 2027-04-10 (+100d) | 2027-01-02 → 2027-04-11 (+99d) | 29d → none |
| 3 | **Finishes for Infrastructure Networks** | 2026-12-07 → 2027-03-16 (+99d) | 2027-01-10 → 2027-04-19 (+99d) |  |
| 11 | **Storm Drainage Network** | 2026-12-26 → 2027-04-04 (+99d) | 2026-12-31 → 2027-04-10 (+100d) |  |
| TF | **Testing and Finishes** | 2026-12-26 → 2027-04-04 (+99d) | 2026-12-31 → 2027-04-10 (+100d) |  |
| CO-SD-ML-TF-100 | Testing Work for Pipes of Storm Drainage Network for Alignment-RD-03-1 | 2026-12-26 → 2027-04-04 (+99d) | 2026-12-28 → 2027-04-06 (+99d) | 13d → none |
| CO-SD-MH-TF-210 | Testing Works for Manholes of Storm Drainage Network for Alignment-RD-03-1 | 2026-12-29 → 2027-04-07 (+99d) | 2026-12-31 → 2027-04-10 (+100d) | 29d → none |
| 9 | **Potable Water Network** | 2026-12-22 → 2027-03-31 (+99d) | 2026-12-26 → 2027-04-04 (+99d) |  |
| TF | **Testing and Finishes** | 2026-12-22 → 2027-03-31 (+99d) | 2026-12-26 → 2027-04-04 (+99d) |  |
| CO-PW-TF-100 | Final Finishes works and Covers for Valves and Valve Chambers for Alignment-RD-03-1 | 2026-12-22 → 2027-03-31 (+99d) | 2026-12-26 → 2027-04-04 (+99d) | 15d → none |
| CO-PW-TF-110 | Testing of Potable Water Network for Alignment-RD-03-1 | 2026-12-22 → 2027-03-31 (+99d) | 2026-12-23 → 2027-04-01 (+99d) | 29d → none |
| CO-PW-TF-120 | Fire Hydrant Finishies (S.Box + Safety + Marker Post ) of Potable Water Network for Alignment-RD-03-1 | 2026-12-22 → 2027-03-31 (+99d) | 2026-12-24 → 2027-04-03 (+100d) | 14d → none |
| 1 | **Treated Sewage Effluent (Tse)** | 2027-01-10 → 2027-04-19 (+99d) | 2027-01-10 → 2027-04-19 (+99d) |  |

| ID | Task | Start | Finish | Total float |
| --- | --- | --- | --- | --- |
| TF | **Testing and Finishes** | 2027-01-10 → 2027-04-19 (+99d) | 2027-01-10 → 2027-04-19 (+99d) |  |
| CO-TSE-TF-170 | Final Testing (pressure tests) of Treated Sewage Effluent (Tse) for Alignment-RD-03-1 | 2027-01-10 → 2027-04-19 (+99d) | 2027-01-10 → 2027-04-19 (+99d) | 15d → none |
| 6 | **Low Voltage Network** | 2026-12-07 → 2027-03-16 (+99d) | 2026-12-10 → 2027-03-20 (+100d) |  |
| TT | **Termination and Testing Works** | 2026-12-07 → 2027-03-16 (+99d) | 2026-12-10 → 2027-03-20 (+100d) |  |
| CON-LV-TT-110 | Testing and Termination Works for Distribution Pillars Units of Low Voltage Network for Alignment-RD-03-1 | 2026-12-07 → 2027-03-16 (+99d) | 2026-12-08 → 2027-03-17 (+99d) | 37d → none |
| CON-LV-TT-100 | Testing and Termination Works for Substation Low Voltage Panel Boards of Low Voltage Network for Alignment-RD-03-1 | 2026-12-09 → 2027-03-18 (+99d) | 2026-12-10 → 2027-03-20 (+100d) | 47d → none |
| 1 | **Earthing System Works** | 2026-12-09 → 2027-03-18 (+99d) | 2026-12-10 → 2027-03-20 (+100d) |  |
| CON-LV-ES-100 | Earthing System Works for Distribution Pillars Units of Low Voltage Network for Alignment-RD-03-1 | 2026-12-09 → 2027-03-18 (+99d) | 2026-12-10 → 2027-03-20 (+100d) | 37d → none |
| 12 | **Street Lighting Network** | 2026-12-15 → 2027-03-24 (+99d) | 2027-01-03 → 2027-04-12 (+99d) |  |
| TR | **Termination and Testing Works** | 2026-12-15 → 2027-03-24 (+99d) | 2027-01-03 → 2027-04-12 (+99d) |  |
| CO-SL-LP-580 | Installation Works for Lighting Fixtures With Drop Wire of Street Lighting Network for Alignment-RD-03-1 | 2026-12-15 → 2027-03-24 (+99d) | 2026-12-21 → 2027-03-30 (+99d) | 24d → none |
| CO-SL-TF-570 | Testing Works for Lighting Poles of Street Lighting Network for Alignment-RD-03-1 | 2026-12-28 → 2027-04-06 (+99d) | 2027-01-03 → 2027-04-12 (+99d) | 27d → none |
| ES | **Earthing System Works** | 2026-12-22 → 2027-03-31 (+99d) | 2026-12-27 → 2027-04-05 (+99d) |  |
| CO-SL-ES-320 | Install Earthing System Works for Lighting Poles of Street Lighting Network for Alignment-RD-03-1 | 2026-12-22 → 2027-03-31 (+99d) | 2026-12-24 → 2027-04-03 (+100d) | 24d → none |
| CO-SL-ES-330 | Install Earthing System Works for Lighting Panel Boards of Street Lighting Network for Alignment-RD-03-1 | 2026-12-26 → 2027-04-04 (+99d) | 2026-12-27 → 2027-04-05 (+99d) | 25d → none |
| 3 | **Telecom and Light Current Network** | 2026-12-10 → 2027-03-20 (+100d) | 2026-12-16 → 2027-03-25 (+99d) |  |
| 1 | **Testing and Finishes** | 2026-12-10 → 2027-03-20 (+100d) | 2026-12-16 → 2027-03-25 (+99d) |  |
| CO-TE-CTV-TF-140 | Testing and Interface modules with Telecom for Alignment-RD-03-1 | 2026-12-10 → 2027-03-20 (+100d) | 2026-12-16 → 2027-03-25 (+99d) | 30d → none |
| CO-TE-CTV-TF-330 | Testing and Interface modules with CCTV, Telephone, MSN and Access Control for Alignment-RD-03-1 | 2026-12-10 → 2027-03-20 (+100d) | 2026-12-16 → 2027-03-25 (+99d) | 30d → none |
| 2 | **Alignment-RD-03-2** | 2026-07-21 → 2026-10-03 (+74d) | 2027-02-06 → 2027-05-22 (+105d) |  |
| EW | **Earthworks** | 2026-07-21 → 2026-10-03 (+74d) | 2026-08-03 → 2026-10-15 (+73d) |  |
| EW | **Earthworks** | 2026-07-21 → 2026-10-03 (+74d) | 2026-08-03 → 2026-10-15 (+73d) |  |
| CO-EW-240 | Excavation and Backfilling Works Upto Design Level for Earthworks for Alignment-RD-03-2 | 2026-07-21 → 2026-10-03 (+74d) | 2026-08-03 → 2026-10-15 (+73d) | 4d → none |
| SD | **Storm Drainage Network** | 2026-08-22 → 2026-11-26 (+96d) | 2026-10-15 → 2027-01-19 (+96d) |  |
| MH | **Manholes** | 2026-08-22 → 2026-11-26 (+96d) | 2026-10-03 → 2027-01-06 (+95d) |  |
| CO-SD-MH-350 | Trench Excavation and Bedding Works for Manholes of Storm Drainage Network for Alignment-RD-03-2 | 2026-08-22 → 2026-11-26 (+96d) | 2026-09-01 → 2026-12-07 (+97d) | 19d → none |
| CO-SD-MH-360 | Install RC Footing Works for Manholes of Storm Drainage Network for Alignment-RD-03-2 | 2026-09-02 → 2026-12-08 (+97d) | 2026-09-12 → 2026-12-17 (+96d) | 19d → none |
| CO-SD-MH-370 | Install RC Wall Rings & Slab Works for Manholes of Storm Drainage Network for Alignment-RD-03-2 | 2026-09-13 → 2026-12-19 (+97d) | 2026-09-24 → 2026-12-29 (+96d) | 19d → none |
| CO-SD-MH-380 | Backfilling Works for Manholes of Storm Drainage Network for Alignment-RD-03-2 | 2026-09-26 → 2026-12-30 (+95d) | 2026-10-03 → 2027-01-06 (+95d) | 30d → none |
| ML | **Main Line Sections** | 2026-09-26 → 2026-12-30 (+95d) | 2026-10-15 → 2027-01-19 (+96d) |  |
| CO-SD-ML-230 | Trench Excavation and Bedding Works for Main Lines of Storm Drainage Network for Alignment-RD-03-2 | 2026-09-26 → 2026-12-30 (+95d) | 2026-10-03 → 2027-01-06 (+95d) | 19d → none |
| CO-SD-ML-240 | Pipes Laying Works for Main Lines of Storm Drainage Network for Alignment-RD-03-2 | 2026-10-04 → 2027-01-07 (+95d) | 2026-10-08 → 2027-01-12 (+96d) | 19d → none |
| CO-SD-ML-250 | Trench Backfilling and Compaction Works for Main Lines of Storm Drainage Network for Alignment-RD-03-2 | 2026-10-10 → 2027-01-13 (+95d) | 2026-10-15 → 2027-01-19 (+96d) | 19d → none |
| MV | **Medium Voltage Network** | 2026-11-04 → 2027-02-08 (+96d) | 2026-11-22 → 2027-02-25 (+95d) |  |
| CW | **Cabling Works** | 2026-11-04 → 2027-02-08 (+96d) | 2026-11-22 → 2027-02-25 (+95d) |  |
| CO-MV-ML-370 | Trench Excavation and Bedding Works for Medium Voltage Network for Alignment-RD-03-2 | 2026-11-04 → 2027-02-08 (+96d) | 2026-11-09 → 2027-02-13 (+96d) | 3d → none |
| CO-MV-ML-380 | Duct Laying Works for Medium Voltage Network for Alignment-RD-03-2 | 2026-11-11 → 2027-02-15 (+96d) | 2026-11-16 → 2027-02-20 (+96d) | 6d → none |
| CO-MV-ML-390 | Trench Backfilling and Compaction Works for Medium Voltage Network for Alignment-RD-03-2 | 2026-11-18 → 2027-02-22 (+96d) | 2026-11-22 → 2027-02-25 (+95d) | 5d → none |
| LV | **Low Voltage Network** | 2026-11-25 → 2027-03-01 (+96d) | 2026-12-29 → 2027-04-07 (+99d) |  |
| MLVC | **Main Low Voltage Cables Works ( Cable 300 MM )** | 2026-11-25 → 2027-03-01 (+96d) | 2026-12-19 → 2027-03-28 (+99d) |  |
| CON-LV-ML-220 | Trench Excavation and Bedding Works for Main Cable of Low Voltage Network for Alignment-RD-03-2 | 2026-11-25 → 2027-03-01 (+96d) | 2026-12-01 → 2027-03-07 (+96d) | 3d → none |
| CON-LV-ML-230 | Cable Laying Works for Main Cable of Low Voltage Network for Alignment-RD-03-2 | 2026-12-02 → 2027-03-08 (+96d) | 2026-12-12 → 2027-03-21 (+99d) | 3d → none |
| CON-LV-ML-240 | Trench Backfilling and Compaction Works for Main Cable of Low Voltage Network for Alignment-RD-03-2 | 2026-12-13 → 2027-03-22 (+99d) | 2026-12-19 → 2027-03-28 (+99d) | 6d → none |
| SLVC | **Service Low Voltage Cables Works ( Cable 70 MM )** | 2026-12-02 → 2027-03-08 (+96d) | 2026-12-29 → 2027-04-07 (+99d) |  |
| CON-LV-HC-220 | Trench Excavation and Bedding Works for Service Cable of Low Voltage Network for Alignment-RD-03-2 | 2026-12-02 → 2027-03-08 (+96d) | 2026-12-07 → 2027-03-16 (+99d) | 7d → none |
| CON-LV-HC-230 | Cable Laying Works for Service Cable of Low Voltage Network for Alignment-RD-03-2 | 2026-12-13 → 2027-03-22 (+99d) | 2026-12-22 → 2027-03-31 (+99d) | 3d → none |
| CON-LV-HC-240 | Trench Backfilling and Compaction Works for Service Cable of Low Voltage Network for Alignment-RD-03-2 | 2026-12-23 → 2027-04-01 (+99d) | 2026-12-29 → 2027-04-07 (+99d) | 3d → none |
| DP | **Distribution Pillars Works** | 2026-12-03 → 2027-03-13 (+100d) | 2026-12-15 → 2027-03-24 (+99d) |  |
| CON-LV-DP-220 | Foundation Excavation Works for Distribution Pillars of Low Voltage Network for Alignment-RD-03-2 | 2026-12-03 → 2027-03-13 (+100d) | 2026-12-10 → 2027-03-20 (+100d) | 15d → none |
| CON-LV-DP-230 | Pouring Plain Concrete For Distribution Pillar Units of Low Voltage Network for Alignment-RD-03-2 | 2026-12-12 → 2027-03-21 (+99d) | 2026-12-13 → 2027-03-22 (+99d) | 15d → none |
| CON-LV-DP-240 | Installation Works for Distribution Pillar Units of Low Voltage Network for Alignment-RD-03-2 | 2026-12-14 → 2027-03-23 (+99d) | 2026-12-15 → 2027-03-24 (+99d) | 15d → none |
| SL | **Street Lighting Network** | 2026-11-10 → 2027-02-14 (+96d) | 2026-12-03 → 2027-03-13 (+100d) |  |
| LP | **Lighting Poles Works** | 2026-11-10 → 2027-02-14 (+96d) | 2026-11-28 → 2027-03-03 (+95d) |  |
| CO-SL-LP-500 | Installation Works for Lighting Poles Foundation of Street Lighting Network for Alignment-RD-03-2 | 2026-11-10 → 2027-02-14 (+96d) | 2026-11-15 → 2027-02-18 (+95d) | 14d → none |
| CO-SL-LP-510 | Installation Works for Lighting Poles of Street Lighting Network for Alignment-RD-03-2 | 2026-11-16 → 2027-02-20 (+96d) | 2026-11-21 → 2027-02-24 (+95d) | 14d → none |
| CO-SL-LP-520 | Backfilling Works for Lighting Poles of Street Lighting Network for Alignment-RD-03-2 | 2026-11-22 → 2027-02-25 (+95d) | 2026-11-28 → 2027-03-03 (+95d) | 18d → none |
| CW | **Cabling Works** | 2026-11-23 → 2027-02-27 (+96d) | 2026-12-03 → 2027-03-13 (+100d) |  |
| CO-SL-CL-380 | Cable Laying Works for Street Lighting Network for Alignment-RD-03-2 | 2026-11-23 → 2027-02-27 (+96d) | 2026-11-28 → 2027-03-03 (+95d) | 13d → none |
| CO-SL-CL-390 | Trench Backfilling and Compaction Works for Street Lighting Network for Alignment-RD-03-2 | 2026-11-29 → 2027-03-04 (+95d) | 2026-12-03 → 2027-03-13 (+100d) | 13d → none |
| TE | **Telecom and Light Current Network** | 2026-12-30 → 2027-04-08 (+99d) | 2027-01-02 → 2027-04-11 (+99d) |  |
| DD | **CCTV, Telephone, MSN, ACs System Works** | 2026-12-30 → 2027-04-08 (+99d) | 2027-01-02 → 2027-04-11 (+99d) |  |
| CO-TE-CTV-240 | Installation of CCTV, Telephone, ACS and MSN Systems Cables for Alignment-RD-03-2 | 2026-12-30 → 2027-04-08 (+99d) | 2027-01-02 → 2027-04-11 (+99d) | 20d → none |
| RD | **Road Works** | 2026-12-30 → 2027-04-08 (+99d) | 2027-02-06 → 2027-05-22 (+105d) |  |
| RD | **Pre-Bituminous Construction** | 2026-12-30 → 2027-04-08 (+99d) | 2027-01-10 → 2027-04-19 (+99d) |  |
| CO-RD-PB-220 | Subgrade Layer for Road Works for Alignment-RD-03-2 | 2026-12-30 → 2027-04-08 (+99d) | 2027-01-04 → 2027-04-13 (+99d) | 3d → none |
| CO-RD-PB-230 | Installation of Aggregate Base Course Layer and Interlock Works for Road Works for Alignment-RD-03-2 | 2027-01-05 → 2027-04-14 (+99d) | 2027-01-10 → 2027-04-19 (+99d) | 3d → none |
| 1 | **Bituminous Construction** | 2027-01-11 → 2027-04-20 (+99d) | 2027-01-27 → 2027-05-06 (+99d) |  |
| CO-RD-B-240 | Bituminous Base Courses Layers for Road Works for Alignment-RD-03-2 | 2027-01-11 → 2027-04-20 (+99d) | 2027-01-13 → 2027-04-22 (+99d) | 3d → none |
| CON-RD-MR-230 | Preparation of Asphaltic Wearing Course Layer for Roads Network for Alignment-RD-03-2 | 2027-01-25 → 2027-05-04 (+99d) | 2027-01-27 → 2027-05-06 (+99d) | 5d → none |
| LS | **Pavement Works** | 2027-01-14 → 2027-04-24 (+100d) | 2027-01-30 → 2027-05-09 (+99d) |  |

| ID | Task | Start | Finish | Total float |
| --- | --- | --- | --- | --- |
| CO-RD-PV-240 | Fixing of Curbstone for Sidewalks Pavement for Alignment-RD-03-2 | 2027-01-14 → 2027-04-24 (+100d) | 2027-01-21 → 2027-05-01 (+100d) | 3d → none |
| CO-RD-PV-250 | Fixing of Interlock Tiles for Sidewalks Pavement for Alignment-RD-03-2 | 2027-01-23 → 2027-05-02 (+99d) | 2027-01-30 → 2027-05-09 (+99d) | 3d → none |
| TS | **Traffic Signs Boards and Roads Marking** | 2027-01-31 → 2027-05-10 (+99d) | 2027-02-06 → 2027-05-22 (+105d) |  |
| CO-RD-F-RM-220 | Application of Road Marking Works For Road Works for Alignment-RD-03-2 | 2027-01-31 → 2027-05-10 (+99d) | 2027-02-02 → 2027-05-12 (+99d) | 3d → none |
| CO-RD-F-TS-160 | Installation Works of Traffic Signs Boards For Road Works for Alignment-RD-03-2 | 2027-02-03 → 2027-05-13 (+99d) | 2027-02-06 → 2027-05-22 (+105d) | 3d → none |
| 3 | **Finishes for Infrastructure Networks** | 2026-11-23 → 2027-02-27 (+96d) | 2027-01-24 → 2027-05-03 (+99d) |  |
| 11 | **Storm Drainage Network** | 2027-01-06 → 2027-04-15 (+99d) | 2027-01-24 → 2027-05-03 (+99d) |  |
| TF | **Testing and Finishes** | 2027-01-06 → 2027-04-15 (+99d) | 2027-01-24 → 2027-05-03 (+99d) |  |
| CO-SD-MH-TF-290 | Testing Works for Manholes of Storm Drainage Network for Alignment-RD-03-2 | 2027-01-06 → 2027-04-15 (+99d) | 2027-01-12 → 2027-04-21 (+99d) | 15d → none |
| CO-SD-CB-TF-260 | Testing Works for Catch Basins of Storm Drainage Network for Alignment-RD-03-2 | 2027-01-14 → 2027-04-24 (+100d) | 2027-01-24 → 2027-05-03 (+99d) | 5d → none |
| 14 | **Medium Voltage Network** | 2026-11-23 → 2027-02-27 (+96d) | 2026-11-29 → 2027-03-04 (+95d) |  |
| TT | **Termination and Testing Works** | 2026-11-23 → 2027-02-27 (+96d) | 2026-11-29 → 2027-03-04 (+95d) |  |
| CO-MV-TF-260 | Testing and Termination Works of Medium Voltage Network for Alignment-RD-03-2 | 2026-11-23 → 2027-02-27 (+96d) | 2026-11-29 → 2027-03-04 (+95d) | 23d → none |
| 6 | **Low Voltage Network** | 2026-12-16 → 2027-03-25 (+99d) | 2027-01-06 → 2027-04-15 (+99d) |  |
| TT | **Termination and Testing Works** | 2026-12-16 → 2027-03-25 (+99d) | 2027-01-06 → 2027-04-15 (+99d) |  |
| CON-LV-TT-190 | Testing and Termination Works for Distribution Pillars Units of Low Voltage Network for Alignment-RD-03-2 | 2026-12-16 → 2027-03-25 (+99d) | 2026-12-22 → 2027-03-31 (+99d) | 36d → none |
| CON-LV-TT-180 | Testing and Termination Works for Substation Low Voltage Panel Boards of Low Voltage Network for Alignment-RD-03-2 | 2026-12-30 → 2027-04-08 (+99d) | 2027-01-06 → 2027-04-15 (+99d) | 30d → none |
| 1 | **Earthing System Works** | 2026-12-23 → 2027-04-01 (+99d) | 2026-12-24 → 2027-04-03 (+100d) |  |
| CON-LV-ES-140 | Earthing System Works for Distribution Pillars Units of Low Voltage Network for Alignment-RD-03-2 | 2026-12-23 → 2027-04-01 (+99d) | 2026-12-24 → 2027-04-03 (+100d) | 41d → none |
| 12 | **Street Lighting Network** | 2026-12-08 → 2027-03-17 (+99d) | 2026-12-23 → 2027-04-01 (+99d) |  |
| TR | **Termination and Testing Works** | 2026-12-08 → 2027-03-17 (+99d) | 2026-12-23 → 2027-04-01 (+99d) |  |
| CO-SL-LP-530 | Installation Works for Lighting Fixtures With Drop Wire of Street Lighting Network for Alignment-RD-03-2 | 2026-12-08 → 2027-03-17 (+99d) | 2026-12-14 → 2027-03-23 (+99d) | 10d → none |
| CO-SL-TF-530 | Testing Works for Lighting Poles of Street Lighting Network for Alignment-RD-03-2 | 2026-12-17 → 2027-03-27 (+100d) | 2026-12-23 → 2027-04-01 (+99d) | 8d → none |
| ES | **Earthing System Works** | 2026-12-17 → 2027-03-27 (+100d) | 2026-12-22 → 2027-03-31 (+99d) |  |
| CO-SL-ES-300 | Install Earthing System Works for Lighting Poles of Street Lighting Network for Alignment-RD-03-2 | 2026-12-17 → 2027-03-27 (+100d) | 2026-12-20 → 2027-03-29 (+99d) | 43d → none |
| CO-SL-ES-310 | Install Earthing System Works for Lighting Panel Boards of Street Lighting Network for Alignment-RD-03-2 | 2026-12-21 → 2027-03-30 (+99d) | 2026-12-22 → 2027-03-31 (+99d) | 43d → none |
| 3 | **Telecom and Light Current Network** | 2027-01-03 → 2027-04-12 (+99d) | 2027-01-06 → 2027-04-15 (+99d) |  |
| 1 | **Testing and Finishes** | 2027-01-03 → 2027-04-12 (+99d) | 2027-01-06 → 2027-04-15 (+99d) |  |
| CO-TE-CTV-TF-320 | Testing and Interface modules with CCTV, Telephone, MSN and Access Control for Alignment-RD-03-2 | 2027-01-03 → 2027-04-12 (+99d) | 2027-01-06 → 2027-04-15 (+99d) | 20d → none |
| 4 | **Alignment-RD-03-3** | 2026-07-07 → 2026-10-12 (+97d) | 2027-01-17 → 2027-04-26 (+99d) |  |
| EW | **Earthworks** | 2026-07-07 → 2026-10-12 (+97d) | 2026-07-19 → 2026-10-24 (+97d) |  |
| EW | **Earthworks** | 2026-07-07 → 2026-10-12 (+97d) | 2026-07-19 → 2026-10-24 (+97d) |  |
| CO-EW-230 | Excavation and Backfilling Works Upto Design Level for Earthworks for Alignment-RD-03-3 | 2026-07-07 → 2026-10-12 (+97d) | 2026-07-19 → 2026-10-24 (+97d) | 3d → none |
| SD | **Storm Drainage Network** | 2026-08-06 → 2026-11-11 (+97d) | 2026-08-24 → 2026-11-29 (+97d) |  |
| ML | **Main Line Sections** | 2026-08-06 → 2026-11-11 (+97d) | 2026-08-24 → 2026-11-29 (+97d) |  |
| CO-SD-ML-200 | Trench Excavation and Bedding Works for Main Lines of Storm Drainage Network for Alignment-RD-03-3 | 2026-08-06 → 2026-11-11 (+97d) | 2026-08-09 → 2026-11-14 (+97d) | 7d → none |
| CO-SD-ML-210 | Pipes Laying Works for Main Lines of Storm Drainage Network for Alignment-RD-03-3 | 2026-08-17 → 2026-11-22 (+97d) | 2026-08-19 → 2026-11-24 (+97d) | 1d → none |
| CO-SD-ML-220 | Trench Backfilling and Compaction Works for Main Lines of Storm Drainage Network for Alignment-RD-03-3 | 2026-08-22 → 2026-11-26 (+96d) | 2026-08-24 → 2026-11-29 (+97d) | 0d → none |
| TSE | **Treated Sewage Effluent (Tse)** | 2026-08-25 → 2026-11-30 (+97d) | 2026-10-03 → 2027-01-06 (+95d) |  |
| CO-TSE-ML-300 | Trench Excavation and Bedding Works for Main Lines of Treated Sewage Effluent (Tse) for Alignment-RD-03-3 | 2026-08-25 → 2026-11-30 (+97d) | 2026-09-06 → 2026-12-12 (+97d) | 21d → none |
| CO-TSE-ML-310 | Pipes Laying Works for Main Lines of Treated Sewage Effluent (Tse) for Alignment-RD-03-3 | 2026-09-07 → 2026-12-13 (+97d) | 2026-09-19 → 2026-12-24 (+96d) | 21d → none |
| CO-TSE-ML-330 | Trench Backfilling and Compaction Works for Treated Sewage Effluent (Tse) for Alignment-RD-03-3 | 2026-09-20 → 2026-12-26 (+97d) | 2026-10-03 → 2027-01-06 (+95d) | 21d → none |
| PW | **Potable Water Network** | 2026-10-04 → 2027-01-07 (+95d) | 2026-11-16 → 2027-02-20 (+96d) |  |
| ML | **Main Line Sections** | 2026-10-04 → 2027-01-07 (+95d) | 2026-11-07 → 2027-02-10 (+95d) |  |
| CO-PW-ML-200 | Trench Excavation and Bedding Works for Main Lines of Potable Water Network for Alignment-RD-03-3 | 2026-10-04 → 2027-01-07 (+95d) | 2026-10-14 → 2027-01-18 (+96d) | 21d → none |
| CO-PW-ML-210 | Pipes Laying and accessories for Main Lines of Potable Water Network for Alignment-RD-03-3 | 2026-10-15 → 2027-01-19 (+96d) | 2026-10-26 → 2027-01-30 (+96d) | 21d → none |
| CO-PW-ML-220 | Trench Backfilling and Compaction Works for Main Lines of Potable Water Network for Alignment-RD-03-3 | 2026-10-27 → 2027-01-31 (+96d) | 2026-11-07 → 2027-02-10 (+95d) | 21d → none |
| VC | **Valve Chamber** | 2026-10-04 → 2027-01-07 (+95d) | 2026-11-16 → 2027-02-20 (+96d) |  |
| CO-PW-VC-290 | Excavation Works for Main Line Valves and Valve Chambers of Potable Water Network for Alignment-RD-03-3 | 2026-10-04 → 2027-01-07 (+95d) | 2026-10-14 → 2027-01-18 (+96d) | 47d → none |
| CO-PW-VC210 | Installation of Valve Chambers of Potable Water Network for Alignment-RD-03-3 | 2026-10-15 → 2027-01-19 (+96d) | 2026-10-26 → 2027-01-30 (+96d) | 47d → none |
| CO-PW-VC-300 | Installation Works for Valves of Potable Water Network for Alignment-RD-03-3 | 2026-11-03 → 2027-02-07 (+96d) | 2026-11-12 → 2027-02-16 (+96d) | 41d → none |
| CO-PW-VC-310 | Backfilling Works for Main Line Valves and Valve Chambers of Potable Water Network for Alignment-RD-03-3 | 2026-11-14 → 2027-02-17 (+95d) | 2026-11-16 → 2027-02-20 (+96d) | 41d → none |
| FH | **Fire Hydrant** | 2026-10-15 → 2027-01-19 (+96d) | 2026-11-16 → 2027-02-20 (+96d) |  |
| CO-PW-FH-230 | Excavation Works for Fire Hydrants of Potable Water Network for Alignment-RD-03-3 | 2026-10-15 → 2027-01-19 (+96d) | 2026-10-26 → 2027-01-30 (+96d) | 47d → none |
| CO-PW-FH-240 | Installation Works for Fire Hydrant of Potable Water Network for Alignment-RD-03-3 | 2026-10-27 → 2027-01-31 (+96d) | 2026-11-07 → 2027-02-10 (+95d) | 47d → none |
| CO-PW-FH-250 | Trench Backfilling and Compaction Works for Fire Hydrants of Potable Water Network for Alignment-RD-03-3 | 2026-11-15 → 2027-02-18 (+95d) | 2026-11-16 → 2027-02-20 (+96d) | 41d → none |
| IR | **Irrigation Network** | 2026-10-15 → 2027-01-19 (+96d) | 2026-11-09 → 2027-02-13 (+96d) |  |
| ML | **Main Line Pipes** | 2026-10-15 → 2027-01-19 (+96d) | 2026-11-09 → 2027-02-13 (+96d) |  |
| CO-IR-ML-350 | Trench Excavation and Bedding Works for Main Lines of Irrigation Network for Alignment-RD-03-3 | 2026-10-15 → 2027-01-19 (+96d) | 2026-10-26 → 2027-01-30 (+96d) | 25d → none |
| CO-IR-ML-360 | Pipes Laying Works for Main Lines of Irrigation Network for Alignment-RD-03-3 | 2026-10-27 → 2027-01-31 (+96d) | 2026-10-29 → 2027-02-02 (+96d) | 25d → none |
| CO-IR-ML-370 | Installation Works for Main Line Valves of Irrigation Network for Alignment-RD-03-3 | 2026-10-31 → 2027-02-03 (+95d) | 2026-11-02 → 2027-02-06 (+96d) | 25d → none |
| CO-IR-ML-390 | Installation Works for Bulbblers And Sprinkler and Irrigation Control System of Irrigation Network for Alignment-RD-03-3 | 2026-11-03 → 2027-02-07 (+96d) | 2026-11-05 → 2027-02-09 (+96d) | 25d → none |
| CO-IR-ML-380 | Trench Backfilling and Compaction Works for Main Lines of Irrigation Network for Alignment-RD-03-3 | 2026-11-07 → 2027-02-10 (+95d) | 2026-11-09 → 2027-02-13 (+96d) | 25d → none |
| MV | **Medium Voltage Network** | 2026-11-10 → 2027-02-14 (+96d) | 2026-11-23 → 2027-02-27 (+96d) |  |
| CW | **Cabling Works** | 2026-11-10 → 2027-02-14 (+96d) | 2026-11-23 → 2027-02-27 (+96d) |  |
| CO-MV-ML-340 | Trench Excavation and Bedding Works for Medium Voltage Network for Alignment-RD-03-3 | 2026-11-10 → 2027-02-14 (+96d) | 2026-11-12 → 2027-02-16 (+96d) | 19d → none |
| CO-MV-ML-350 | Duct Laying Works for Medium Voltage Network for Alignment-RD-03-3 | 2026-11-17 → 2027-02-21 (+96d) | 2026-11-19 → 2027-02-23 (+96d) | 16d → none |
| CO-MV-ML-360 | Trench Backfilling and Compaction Works for Medium Voltage Network for Alignment-RD-03-3 | 2026-11-21 → 2027-02-24 (+95d) | 2026-11-23 → 2027-02-27 (+96d) | 16d → none |
| LV | **Low Voltage Network** | 2026-11-24 → 2027-02-28 (+96d) | 2026-12-26 → 2027-04-04 (+99d) |  |
| MLVC | **Main Low Voltage Cables Works ( Cable 300 MM )** | 2026-11-24 → 2027-02-28 (+96d) | 2026-12-14 → 2027-03-23 (+99d) |  |

| ID | Task | Start | Finish | Total float |
| --- | --- | --- | --- | --- |
| CON-LV-ML-190 | Trench Excavation and Bedding Works for Main Cable of Low Voltage Network for Alignment-RD-03-3 | 2026-11-24 → 2027-02-28 (+96d) | 2026-12-01 → 2027-03-07 (+96d) | 28d → none |
| CON-LV-ML-200 | Cable Laying Works for Main Cable of Low Voltage Network for Alignment-RD-03-3 | 2026-12-02 → 2027-03-08 (+96d) | 2026-12-09 → 2027-03-18 (+99d) | 28d → none |
| CON-LV-ML-210 | Trench Backfilling and Compaction Works for Main Cable of Low Voltage Network for Alignment-RD-03-3 | 2026-12-10 → 2027-03-20 (+100d) | 2026-12-14 → 2027-03-23 (+99d) | 34d → none |
| SLVC | **Service Low Voltage Cables Works ( Cable 70 MM )** | 2026-12-02 → 2027-03-08 (+96d) | 2026-12-21 → 2027-03-30 (+99d) |  |
| CON-LV-HC-190 | Trench Excavation and Bedding Works for Service Cable of Low Voltage Network for Alignment-RD-03-3 | 2026-12-02 → 2027-03-08 (+96d) | 2026-12-09 → 2027-03-18 (+99d) | 28d → none |
| CON-LV-HC-200 | Cable Laying Works for Service Cable of Low Voltage Network for Alignment-RD-03-3 | 2026-12-10 → 2027-03-20 (+100d) | 2026-12-17 → 2027-03-27 (+100d) | 28d → none |
| CON-LV-HC-210 | Trench Backfilling and Compaction Works for Service Cable of Low Voltage Network for Alignment-RD-03-3 | 2026-12-19 → 2027-03-28 (+99d) | 2026-12-21 → 2027-03-30 (+99d) | 28d → none |
| DP | **Distribution Pillars Works** | 2026-12-22 → 2027-03-31 (+99d) | 2026-12-26 → 2027-04-04 (+99d) |  |
| CON-LV-DP-190 | Installation Works for Distribution Pillar Units of Low Voltage Network for Alignment-RD-03-3 | 2026-12-22 → 2027-03-31 (+99d) | 2026-12-26 → 2027-04-04 (+99d) | 32d → none |
| SL | **Street Lighting Network** | 2026-11-24 → 2027-02-28 (+96d) | 2026-12-14 → 2027-03-23 (+99d) |  |
| LP | **Lighting Poles Works** | 2026-11-24 → 2027-02-28 (+96d) | 2026-12-14 → 2027-03-23 (+99d) |  |
| CO-SL-LP-450 | Installation Works for Lighting Poles Foundation of Street Lighting Network for Alignment-RD-03-3 | 2026-11-24 → 2027-02-28 (+96d) | 2026-11-30 → 2027-03-06 (+96d) | 30d → none |
| CO-SL-LP-460 | Installation Works for Lighting Poles of Street Lighting Network for Alignment-RD-03-3 | 2026-12-01 → 2027-03-07 (+96d) | 2026-12-07 → 2027-03-16 (+99d) | 30d → none |
| CO-SL-LP-480 | Backfilling Works for Lighting Poles of Street Lighting Network for Alignment-RD-03-3 | 2026-12-08 → 2027-03-17 (+99d) | 2026-12-14 → 2027-03-23 (+99d) | 30d → none |
| CW | **Cabling Works** | 2026-12-08 → 2027-03-17 (+99d) | 2026-12-14 → 2027-03-23 (+99d) |  |
| CO-SL-CL-350 | Cable Laying Works for Street Lighting Network for Alignment-RD-03-3 | 2026-12-08 → 2027-03-17 (+99d) | 2026-12-14 → 2027-03-23 (+99d) | 30d → none |
| CO-SL-CL-360 | Trench Backfilling and Compaction Works for Street Lighting Network for Alignment-RD-03-3 | 2026-12-08 → 2027-03-17 (+99d) | 2026-12-14 → 2027-03-23 (+99d) | 30d → none |
| TE | **Telecom and Light Current Network** | 2026-12-03 → 2027-03-13 (+100d) | 2027-01-02 → 2027-04-11 (+99d) |  |
| PD | **Ducts Works** | 2026-12-22 → 2027-03-31 (+99d) | 2027-01-02 → 2027-04-11 (+99d) |  |
| CO-TE-DW-230 | Pipes Laying Works for Ducts of Telecom Network for Alignment-RD-03-3 | 2026-12-22 → 2027-03-31 (+99d) | 2026-12-28 → 2027-04-06 (+99d) | 28d → none |
| CO-TE-DW-240 | Trench Backfilling and Compaction Works for Ducts of Telecom Network for Alignment-RD-03-3 | 2026-12-29 → 2027-04-07 (+99d) | 2027-01-02 → 2027-04-11 (+99d) | 28d → none |
| MH | **Manholes Works** | 2026-12-03 → 2027-03-13 (+100d) | 2026-12-12 → 2027-03-21 (+99d) |  |
| CO-TE-MH-230 | Excavation Works for Manholes of Telecom Network for Alignment-RD-03-3 | 2026-12-03 → 2027-03-13 (+100d) | 2026-12-05 → 2027-03-14 (+99d) | 31d → none |
| CO-TE-MH-240 | Installation Works for Manholes of Telecom Network for Alignment-RD-03-3 | 2026-12-06 → 2027-03-15 (+99d) | 2026-12-08 → 2027-03-17 (+99d) | 31d → none |
| CO-TE-MH-250 | Backfilling Works for Manholes of Telecom Network for Alignment-RD-03-3 | 2026-12-09 → 2027-03-18 (+99d) | 2026-12-12 → 2027-03-21 (+99d) | 31d → none |
| DD | **CCTV, Telephone, MSN, ACs System Works** | 2026-12-13 → 2027-03-22 (+99d) | 2026-12-15 → 2027-03-24 (+99d) |  |
| CO-TE-CTV-210 | Installation of CCTV, Telephone, ACS and MSN Systems Cables for Alignment-RD-03-3 | 2026-12-13 → 2027-03-22 (+99d) | 2026-12-15 → 2027-03-24 (+99d) | 31d → none |
| RD | **Road Works** | 2026-12-29 → 2027-04-07 (+99d) | 2027-01-06 → 2027-04-15 (+99d) |  |
| LS | **Pavement Works** | 2026-12-29 → 2027-04-07 (+99d) | 2027-01-02 → 2027-04-11 (+99d) |  |
| CO-RD-PV-220 | Fixing of Curbstone for Sidewalks Pavement for Alignment-RD-03-3 | 2026-12-29 → 2027-04-07 (+99d) | 2027-01-02 → 2027-04-11 (+99d) | 30d → none |
| CO-RD-PV-230 | Fixing of Interlock Tiles for Sidewalks Pavement for Alignment-RD-03-3 | 2026-12-29 → 2027-04-07 (+99d) | 2027-01-02 → 2027-04-11 (+99d) | 30d → none |
| TS | **Traffic Signs Boards and Roads Marking** | 2026-12-29 → 2027-04-07 (+99d) | 2027-01-06 → 2027-04-15 (+99d) |  |
| CO-RD-F-RM-210 | Application of Road Marking Works For Road Works for Alignment-RD-03-3 | 2026-12-29 → 2027-04-07 (+99d) | 2026-12-31 → 2027-04-10 (+100d) | 30d → none |
| CO-RD-F-TS-150 | Installation Works of Traffic Signs Boards For Road Works for Alignment-RD-03-3 | 2027-01-03 → 2027-04-12 (+99d) | 2027-01-06 → 2027-04-15 (+99d) | 29d → none |
| 3 | **Finishes for Infrastructure Networks** | 2026-11-24 → 2027-02-28 (+96d) | 2027-01-17 → 2027-04-26 (+99d) |  |
| 11 | **Storm Drainage Network** | 2027-01-02 → 2027-04-11 (+99d) | 2027-01-06 → 2027-04-15 (+99d) |  |
| TF | **Testing and Finishes** | 2027-01-02 → 2027-04-11 (+99d) | 2027-01-06 → 2027-04-15 (+99d) |  |
| CO-SD-ML-TF-130 | Testing Work for Pipes of Storm Drainage Network for Alignment-RD-03-3 | 2027-01-02 → 2027-04-11 (+99d) | 2027-01-06 → 2027-04-15 (+99d) | 10d → none |
| 9 | **Potable Water Network** | 2026-12-22 → 2027-03-31 (+99d) | 2026-12-29 → 2027-04-07 (+99d) |  |
| TF | **Testing and Finishes** | 2026-12-22 → 2027-03-31 (+99d) | 2026-12-29 → 2027-04-07 (+99d) |  |
| CO-PW-TF-200 | Fire Hydrant Finishies (S.Box + Safety + Marker Post ) of Potable Water Network for Alignment-RD-03-3 | 2026-12-22 → 2027-03-31 (+99d) | 2026-12-24 → 2027-04-03 (+100d) | 14d → none |
| CO-PW-TF-190 | Testing of Potable Water Network for Alignment-RD-03-3 | 2026-12-26 → 2027-04-04 (+99d) | 2026-12-28 → 2027-04-06 (+99d) | 26d → none |
| CO-PW-TF-210 | Final Finishes works and Covers for Valves and Valve Chambers for Alignment-RD-03-3 | 2026-12-26 → 2027-04-04 (+99d) | 2026-12-29 → 2027-04-07 (+99d) | 21d → none |
| 1 | **Treated Sewage Effluent (Tse)** | 2027-01-11 → 2027-04-20 (+99d) | 2027-01-17 → 2027-04-26 (+99d) |  |
| TF | **Testing and Finishes** | 2027-01-11 → 2027-04-20 (+99d) | 2027-01-17 → 2027-04-26 (+99d) |  |
| CO-TSE-TF-200 | Final Testing (pressure tests) of Treated Sewage Effluent (Tse) for Alignment-RD-03-3 | 2027-01-11 → 2027-04-20 (+99d) | 2027-01-17 → 2027-04-26 (+99d) | 15d → none |
| 13 | **Irrigation Network** | 2026-12-26 → 2027-04-04 (+99d) | 2026-12-31 → 2027-04-10 (+100d) |  |
| TF | **Testing and Finishes** | 2026-12-26 → 2027-04-04 (+99d) | 2026-12-31 → 2027-04-10 (+100d) |  |
| CO-IR-TF-210 | Final Testing (pressure tests) of Irrigation Network for Alignment-RD-03-3 | 2026-12-26 → 2027-04-04 (+99d) | 2026-12-31 → 2027-04-10 (+100d) | 29d → none |
| 14 | **Medium Voltage Network** | 2026-11-24 → 2027-02-28 (+96d) | 2026-11-30 → 2027-03-06 (+96d) |  |
| TT | **Termination and Testing Works** | 2026-11-24 → 2027-02-28 (+96d) | 2026-11-30 → 2027-03-06 (+96d) |  |
| CO-MV-TF-250 | Testing and Termination Works of Medium Voltage Network for Alignment-RD-03-3 | 2026-11-24 → 2027-02-28 (+96d) | 2026-11-30 → 2027-03-06 (+96d) | 16d → none |
| 6 | **Low Voltage Network** | 2026-12-27 → 2027-04-05 (+99d) | 2027-01-02 → 2027-04-11 (+99d) |  |
| TT | **Termination and Testing Works** | 2026-12-27 → 2027-04-05 (+99d) | 2027-01-02 → 2027-04-11 (+99d) |  |
| CON-LV-TT-160 | Testing and Termination Works for Substation Low Voltage Panel Boards of Low Voltage Network for Alignment-RD-03-3 | 2026-12-27 → 2027-04-05 (+99d) | 2027-01-02 → 2027-04-11 (+99d) | 34d → none |
| 12 | **Street Lighting Network** | 2026-12-22 → 2027-03-31 (+99d) | 2027-01-10 → 2027-04-19 (+99d) |  |
| TR | **Termination and Testing Works** | 2026-12-22 → 2027-03-31 (+99d) | 2027-01-10 → 2027-04-19 (+99d) |  |
| CO-SL-LP-470 | Installation Works for Lighting Fixtures With Drop Wire of Street Lighting Network for Alignment-RD-03-3 | 2026-12-22 → 2027-03-31 (+99d) | 2026-12-28 → 2027-04-06 (+99d) | 24d → none |
| CO-SL-TF-490 | Testing Works for Lighting Poles of Street Lighting Network for Alignment-RD-03-3 | 2027-01-04 → 2027-04-13 (+99d) | 2027-01-10 → 2027-04-19 (+99d) | 27d → none |
| ES | **Earthing System Works** | 2026-12-22 → 2027-03-31 (+99d) | 2027-01-03 → 2027-04-12 (+99d) |  |
| CO-SL-ES-280 | Install Earthing System Works for Lighting Poles of Street Lighting Network for Alignment-RD-03-3 | 2026-12-22 → 2027-03-31 (+99d) | 2026-12-28 → 2027-04-06 (+99d) | 24d → none |
| CO-SL-ES-290 | Install Earthing System Works for Lighting Panel Boards of Street Lighting Network for Alignment-RD-03-3 | 2026-12-28 → 2027-04-06 (+99d) | 2027-01-03 → 2027-04-12 (+99d) | 25d → none |
| 3 | **Telecom and Light Current Network** | 2026-12-17 → 2027-03-27 (+100d) | 2026-12-30 → 2027-04-08 (+99d) |  |
| 1 | **Testing and Finishes** | 2026-12-17 → 2027-03-27 (+100d) | 2026-12-30 → 2027-04-08 (+99d) |  |
| CO-TE-CTV-TF-260 | Testing and Interface modules with Telecom for Alignment-RD-03-3 | 2026-12-17 → 2027-03-27 (+100d) | 2026-12-23 → 2027-04-01 (+99d) | 30d → none |
| CO-TE-CTV-TF-340 | Testing and Interface modules with CCTV, Telephone, MSN and Access Control for Alignment-RD-03-3 | 2026-12-24 → 2027-04-03 (+100d) | 2026-12-30 → 2027-04-08 (+99d) | 30d → none |
| EX | **External** |  | 2027-01-04 → 2027-04-13 (+99d) |  |
| 2 | **External Road - 1 - 1** |  | 2027-01-03 → 2027-04-12 (+99d) |  |
| EW | **Earthworks** |  | 2026-08-26 → 2026-12-01 (+97d) |  |
| EW | **Earthworks** |  | 2026-08-26 → 2026-12-01 (+97d) |  |

| ID | Task | Start | Finish | Complete | Total float | Other |
| --- | --- | --- | --- | --- | --- | --- |
| CO-EW-250 | Excavation and Backfilling Works Upto Design Level for Earthworks for External Road - 1 - 1(Completed) |  |  |  |  | resources Skilled Labor [568.55 h]; Unskilled Labor [568.55 h]; Dozer [568.55 h]; Water Tanker [568.55 h]; Embankments to the Site and Roads (including Roads , Plots and Pond) [79314]; Excavations (including Roads , Plots and Pond) [4514] → Skilled Labor [568.55 h]; Unskilled Labor [568.55 h]; Dozer [568.55 h]; Water Tanker [568.55 h]; Embankments to the Site and Roads (including Roads , Plots and Pond) [35000]; Excavations (including Roads , Plots and Pond) [4514] |
| CO-EW-250_R | Excavation and Backfilling Works Upto Design Level for Earthworks for External Road - 1 - 1(Remaining) | 2026-08-18 → 2026-11-23 (+97d) | 2026-08-26 → 2026-12-01 (+97d) |  | 32d → none | resources Skilled Labor [487.45 h]; Unskilled Labor [487.45 h]; Dozer [487.45 h]; Water Tanker [487.45 h]; Embankments to the Site and Roads (including Roads , Plots and Pond) [19386]; Excavations (including Roads , Plots and Pond) [1287] → Skilled Labor [487.45 h]; Unskilled Labor [487.45 h]; Dozer [487.45 h]; Water Tanker [487.45 h]; Embankments to the Site and Roads (including Roads , Plots and Pond) [63700]; Excavations (including Roads , Plots and Pond) [1287] |
| RD | **Road Works** | 2026-11-21 → 2027-02-24 (+95d) | 2027-01-03 → 2027-04-12 (+99d) |  |  |  |
| 3 | **Road 01** | 2026-11-21 → 2027-02-24 (+95d) | 2027-01-03 → 2027-04-12 (+99d) |  |  |  |
| RD | **Pre-Bituminous Construction** | 2026-11-21 → 2027-02-24 (+95d) | 2026-12-09 → 2027-03-18 (+99d) |  |  |  |
| CO-RD-PB-240 | Subgrade Layer for Road Works for External Road - 1 - 1 | 2026-11-21 → 2027-02-24 (+95d) | 2026-11-29 → 2027-03-04 (+95d) |  | 32d → none |  |
| CO-RD-PB-250 | Aggregate Base Course Layer for Road Works for External Road - 1 - 1 | 2026-11-30 → 2027-03-06 (+96d) | 2026-12-09 → 2027-03-18 (+99d) |  | 32d → none |  |
| 1 | **Bituminous Construction** | 2026-12-10 → 2027-03-20 (+100d) | 2026-12-19 → 2027-03-28 (+99d) |  |  |  |
| CO-RD-B-260 | Bituminous Base Courses Layers for Road Works for External Road - 1 - 1 | 2026-12-10 → 2027-03-20 (+100d) | 2026-12-14 → 2027-03-23 (+99d) |  | 32d → none |  |
| CON-RD-MR-250 | Preparation of Asphaltic Wearing Course Layer for Roads Network for External Road - 1 - 1 | 2026-12-15 → 2027-03-24 (+99d) | 2026-12-19 → 2027-03-28 (+99d) |  | 41d → none |  |
| LS | **Pavement Works** | 2026-12-15 → 2027-03-24 (+99d) | 2026-12-30 → 2027-04-08 (+99d) |  |  |  |
| CO-RD-PV-260 | Fixing of Curbstone for Sidewalks Pavement for External Road - 1 - 1 | 2026-12-15 → 2027-03-24 (+99d) | 2026-12-23 → 2027-04-01 (+99d) |  | 32d → none |  |
| CO-RD-PV-270 | Fixing of Interlock Tiles for Sidewalks Pavement for External Road - 1 - 1 | 2026-12-24 → 2027-04-03 (+100d) | 2026-12-30 → 2027-04-08 (+99d) |  | 32d → none |  |
| TS | **Traffic Signs Boards and Roads Marking** | 2026-12-31 → 2027-04-10 (+100d) | 2027-01-03 → 2027-04-12 (+99d) |  |  |  |
| CO-RD-F-RM-230 | Application of Road Marking Works For Road Works for External Road - 1 - 1 | 2026-12-31 → 2027-04-10 (+100d) | 2027-01-02 → 2027-04-11 (+99d) |  | 32d → none |  |
| CO-RD-F-TS-170 | Installation Works of Traffic Signs Boards For Road Works for External Road - 1 - 1 | 2027-01-03 → 2027-04-12 (+99d) | 2027-01-03 → 2027-04-12 (+99d) |  | 32d → none |  |
| 4 | **External Road - 1 - 2** |  | 2027-01-04 → 2027-04-13 (+99d) |  |  |  |
| EW | **Earthworks** |  | 2026-09-20 → 2026-12-22 (+93d) |  |  |  |
| EW | **Earthworks** |  | 2026-09-20 → 2026-12-22 (+93d) |  |  |  |
| CO-EW-280_R | Excavation and Backfilling Works Upto Design Level for Earthworks for External Road - 1 - 2(Remaining) | 2026-08-27 → 2026-09-26 A (+30d) | 2026-09-20 → 2026-12-22 (+93d) | 0% → 28% | 34d → none |  |
| RD | **Road Works** | 2026-11-21 → 2027-02-24 (+95d) | 2027-01-04 → 2027-04-13 (+99d) |  |  |  |
| 3 | **Road 01** | 2026-11-21 → 2027-02-24 (+95d) | 2027-01-04 → 2027-04-13 (+99d) |  |  |  |
| RD | **Pre-Bituminous Construction** | 2026-11-21 → 2027-02-24 (+95d) | 2026-12-03 → 2027-03-13 (+100d) |  |  |  |
| CO-RD-PB-300 | Subgrade Layer for Road Works for External Road - 1 - 2 | 2026-11-21 → 2027-02-24 (+95d) | 2026-11-26 → 2027-03-02 (+96d) |  | 32d → none |  |
| CO-RD-PB-310 | Aggregate Base Course Layer for Road Works for External Road - 1 - 2 | 2026-11-28 → 2027-03-03 (+95d) | 2026-12-03 → 2027-03-13 (+100d) |  | 32d → none |  |
| 1 | **Bituminous Construction** | 2026-12-05 → 2027-03-14 (+99d) | 2026-12-16 → 2027-03-25 (+99d) |  |  |  |
| CO-RD-B-320 | Bituminous Base Courses Layers for Road Works for External Road - 1 - 2 | 2026-12-05 → 2027-03-14 (+99d) | 2026-12-12 → 2027-03-21 (+99d) |  | 32d → none |  |
| CON-RD-MR-310 | Preparation of Asphaltic Wearing Course Layer for Roads Network for External Road - 1 - 2 | 2026-12-13 → 2027-03-22 (+99d) | 2026-12-16 → 2027-03-25 (+99d) |  | 40d → none |  |
| LS | **Pavement Works** | 2026-12-14 → 2027-03-23 (+99d) | 2026-12-27 → 2027-04-05 (+99d) |  |  |  |
| CO-RD-PV-320 | Fixing of Curbstone for Sidewalks Pavement for External Road - 1 - 2 | 2026-12-14 → 2027-03-23 (+99d) | 2026-12-20 → 2027-03-29 (+99d) |  | 31d → none |  |
| CO-RD-PV-330 | Fixing of Interlock Tiles for Sidewalks Pavement for External Road - 1 - 2 | 2026-12-21 → 2027-03-30 (+99d) | 2026-12-27 → 2027-04-05 (+99d) |  | 31d → none |  |
| TS | **Traffic Signs Boards and Roads Marking** | 2026-12-28 → 2027-04-06 (+99d) | 2027-01-04 → 2027-04-13 (+99d) |  |  |  |
| CO-RD-F-RM-260 | Application of Road Marking Works For Road Works for External Road - 1 - 2 | 2026-12-28 → 2027-04-06 (+99d) | 2026-12-31 → 2027-04-10 (+100d) |  | 31d → none |  |
| CO-RD-F-TS-200 | Installation Works of Traffic Signs Boards For Road Works for External Road - 1 - 2 | 2027-01-02 → 2027-04-11 (+99d) | 2027-01-04 → 2027-04-13 (+99d) |  | 31d → none |  |
| 1 | **External Road - 2** |  | 2027-01-04 → 2027-04-13 (+99d) |  |  |  |
| EW | **Earthworks** |  | 2026-10-15 → 2027-01-16 (+93d) |  |  |  |
| EW | **Earthworks** |  | 2026-10-15 → 2027-01-16 (+93d) |  |  |  |
| CO-EW-260 | Excavation and Backfilling Works Upto Design Level for Earthworks for External Road - 2(Completed) |  |  |  |  | resources Skilled Labor [327.95 h]; Unskilled Labor [327.95 h]; Dozer [327.95 h]; Water Tanker [327.95 h]; Embankments to the Site and Roads (including Roads , Plots and Pond) [40450]; Excavations (including Roads , Plots and Pond) [2377] → Skilled Labor [327.95 h]; Unskilled Labor [327.95 h]; Dozer [327.95 h]; Water Tanker [327.95 h]; Embankments to the Site and Roads (including Roads , Plots and Pond) [6000]; Excavations (including Roads , Plots and Pond) [2377] |
| CO-EW-260_R | Excavation and Backfilling Works Upto Design Level for Earthworks for External Road - 2(Remaining) | 2026-09-21 → 2026-12-23 (+93d) | 2026-10-15 → 2027-01-16 (+93d) |  | 34d → none | resources Skilled Labor [536.05 h]; Unskilled Labor [536.05 h]; Dozer [536.05 h]; Water Tanker [536.05 h]; Embankments to the Site and Roads (including Roads , Plots and Pond) [30950]; Excavations (including Roads , Plots and Pond) [1820] → Skilled Labor [536.05 h]; Unskilled Labor [536.05 h]; Dozer [536.05 h]; Water Tanker [536.05 h]; Embankments to the Site and Roads (including Roads , Plots and Pond) [65400]; Excavations (including Roads , Plots and Pond) [1820] |
| RD | **Road Works** | 2026-11-14 → 2027-02-17 (+95d) | 2027-01-04 → 2027-04-13 (+99d) |  |  |  |
| 3 | **Road 01** | 2026-11-14 → 2027-02-17 (+95d) | 2027-01-04 → 2027-04-13 (+99d) |  |  |  |
| RD | **Pre-Bituminous Construction** | 2026-11-14 → 2027-02-17 (+95d) | 2026-11-21 → 2027-02-24 (+95d) |  |  |  |
| CO-RD-PB-260 | Subgrade Layer for Road Works for External Road - 2 | 2026-11-14 → 2027-02-17 (+95d) | 2026-11-21 → 2027-02-24 (+95d) |  | 31d → none |  |
| CO-RD-PB-270 | Aggregate Base Course Layer for Road Works for External Road - 2 | 2026-11-17 → 2027-02-21 (+96d) | 2026-11-21 → 2027-02-24 (+95d) |  | 31d → none |  |
| 1 | **Bituminous Construction** | 2026-11-22 → 2027-02-25 (+95d) | 2026-12-14 → 2027-03-23 (+99d) |  |  |  |
| CO-RD-B-280 | Bituminous Base Courses Layers for Road Works for External Road - 2 | 2026-11-22 → 2027-02-25 (+95d) | 2026-12-02 → 2027-03-08 (+96d) |  | 31d → none |  |
| CON-RD-MR-270 | Preparation of Asphaltic Wearing Course Layer for Roads Network for External Road - 2 | 2026-12-03 → 2027-03-13 (+100d) | 2026-12-14 → 2027-03-23 (+99d) |  | 33d → none |  |
| LS | **Pavement Works** | 2026-12-14 → 2027-03-23 (+99d) | 2026-12-23 → 2027-04-01 (+99d) |  |  |  |
| CO-RD-PV-280 | Fixing of Curbstone for Sidewalks Pavement for External Road - 2 | 2026-12-14 → 2027-03-23 (+99d) | 2026-12-23 → 2027-04-01 (+99d) |  | 31d → none |  |
| CO-RD-PV-290 | Fixing of Interlock Tiles for Sidewalks Pavement for External Road - 2 | 2026-12-14 → 2027-03-23 (+99d) | 2026-12-23 → 2027-04-01 (+99d) |  | 31d → none |  |
| TS | **Traffic Signs Boards and Roads Marking** | 2026-12-24 → 2027-04-03 (+100d) | 2027-01-04 → 2027-04-13 (+99d) |  |  |  |
| CO-RD-F-RM-240 | Application of Road Marking Works For Road Works for External Road - 2 | 2026-12-24 → 2027-04-03 (+100d) | 2027-01-04 → 2027-04-13 (+99d) |  | 31d → none |  |
| CO-RD-F-TS-180 | Installation Works of Traffic Signs Boards For Road Works for External Road - 2 | 2026-12-27 → 2027-04-05 (+99d) | 2026-12-28 → 2027-04-06 (+99d) |  | 34d → none |  |
| 3 | **External Road - 3** |  | 2027-01-04 → 2027-04-13 (+99d) |  |  |  |
| EW | **Earthworks** |  | 2026-11-09 → 2027-01-24 (+76d) |  |  |  |
| EW | **Earthworks** |  | 2026-11-09 → 2027-01-24 (+76d) |  |  |  |
| CO-EW-270_R | Excavation and Backfilling Works Upto Design Level for Earthworks for External Road - 3(Remaining) | 2026-10-17 → 2026-08-23 A (-55d) | 2026-11-09 → 2027-01-24 (+76d) | 0% → 68% | 34d → none |  |
| TE | **Telecom and Light Current Network** | 2026-10-01 → 2027-01-05 (+96d) | 2026-11-19 → 2027-02-23 (+96d) |  |  |  |
| MH | **Manholes Works** | 2026-10-01 → 2027-01-05 (+96d) | 2026-11-12 → 2027-02-16 (+96d) |  |  |  |
| CO-TE-MH-290 | Excavation Works for Manholes of Telecom Network for External Road - 3 | 2026-10-01 → 2027-01-05 (+96d) | 2026-10-21 → 2027-01-25 (+96d) |  | 31d → none |  |
| CO-TE-MH-300 | Installation Works for Manholes of Telecom Network for External Road - 3 | 2026-10-22 → 2027-01-26 (+96d) | 2026-11-12 → 2027-02-16 (+96d) |  | 31d → none |  |
| CO-TE-MH-310 | Backfilling Works for Manholes of Telecom Network for External Road - 3 | 2026-11-07 → 2027-02-10 (+95d) | 2026-11-12 → 2027-02-16 (+96d) |  | 31d → none |  |
| 1 | **Testing and Finishes** | 2026-11-14 → 2027-02-17 (+95d) | 2026-11-19 → 2027-02-23 (+96d) |  |  |  |
| CO-TE-CTV-TF-360 | Testing and Interface modules with Telecom for External Road - 3 | 2026-11-14 → 2027-02-17 (+95d) | 2026-11-19 → 2027-02-23 (+96d) |  | 31d → none |  |
| RD | **Road Works** | 2026-11-14 → 2026-09-08 (-67d) | 2027-01-04 → 2027-04-13 (+99d) |  |  |  |
| 3 | **Road 01** | 2026-11-14 → 2026-09-08 (-67d) | 2027-01-04 → 2027-04-13 (+99d) |  |  |  |
| RD | **Pre-Bituminous Construction** | 2026-11-14 → 2026-09-08 (-67d) | 2026-11-29 → 2027-03-04 (+95d) |  |  |  |
| CO-RD-PB-280 | Subgrade Layer for Road Works for External Road - 3 | 2026-11-14 → 2026-09-08 A (-67d) | 2026-11-19 → 2027-02-23 (+96d) | 0% → 50% | 32d → none |  |
| CO-RD-PB-290 | Aggregate Base Course Layer for Road Works for External Road - 3 | 2026-11-17 → 2027-02-21 (+96d) | 2026-11-29 → 2027-03-04 (+95d) |  | 34d → none |  |
| 1 | **Bituminous Construction** | 2026-12-03 → 2027-03-13 (+100d) | 2026-12-29 → 2027-04-07 (+99d) |  |  |  |

| ID | Task | Start | Finish | Complete | Total float |
| --- | --- | --- | --- | --- | --- |
| CO-RD-B-300 | Bituminous Base Courses Layers for Road Works for External Road - 3 | 2026-12-03 → 2027-03-13 (+100d) | 2026-12-16 → 2027-03-25 (+99d) |  | 31d → none |
| CON-RD-MR-290 | Preparation of Asphaltic Wearing Course Layer for Roads Network for External Road - 3 | 2026-12-17 → 2027-03-27 (+100d) | 2026-12-29 → 2027-04-07 (+99d) |  | 31d → none |
| LS | **Pavement Works** | 2026-12-24 → 2027-04-03 (+100d) | 2026-12-27 → 2027-04-05 (+99d) |  |  |
| CO-RD-PV-300 | Fixing of Curbstone for Sidewalks Pavement for External Road - 3 | 2026-12-24 → 2027-04-03 (+100d) | 2026-12-27 → 2027-04-05 (+99d) |  | 33d → none |
| CO-RD-PV-310 | Fixing of Interlock Tiles for Sidewalks Pavement for External Road - 3 | 2026-12-24 → 2027-04-03 (+100d) | 2026-12-27 → 2027-04-05 (+99d) |  | 36d → none |
| TS | **Traffic Signs Boards and Roads Marking** | 2026-12-30 → 2027-04-08 (+99d) | 2027-01-04 → 2027-04-13 (+99d) |  |  |
| CO-RD-F-RM-250 | Application of Road Marking Works For Road Works for External Road - 3 | 2026-12-30 → 2027-04-08 (+99d) | 2027-01-04 → 2027-04-13 (+99d) |  | 31d → none |
| CO-RD-F-TS-190 | Installation Works of Traffic Signs Boards For Road Works for External Road - 3 | 2026-12-30 → 2027-04-08 (+99d) | 2027-01-02 → 2027-04-11 (+99d) |  | 33d → none |
| GEN | **Superstructure Work** | 2026-07-09 → 2026-08-01 (+23d) | 2027-02-28 → 2027-05-31 (+92d) |  |  |
| 4 | **Utility Buildings** | 2026-07-09 → 2026-08-29 (+51d) | 2027-02-28 → 2027-05-31 (+92d) |  |  |
| 4 | **Water Pump Station** | 2026-07-09 → 2026-09-15 (+68d) | 2027-02-10 → 2027-05-26 (+105d) |  |  |
| 1 | **Civil work** | 2026-07-09 → 2026-09-15 (+68d) | 2026-09-30 → 2026-12-08 (+69d) |  |  |
| 1 | **SubStructure** | 2026-07-09 → 2026-09-15 (+68d) | 2026-08-18 → 2026-10-27 (+70d) |  |  |
| CO-UB-PS-100 | Excavation Work for Water Pump station building | 2026-07-09 → 2026-09-15 A (+68d) | 2026-07-18 → 2026-09-17 A (+61d) | 0% → 100% | 0d → none |
| CO-UB-PS-110 | pouring P.C Conceret for Water Pump station building | 2026-07-19 → 2026-09-19 A (+62d) | 2026-07-20 → 2026-09-20 A (+62d) | 0% → 100% | 0d → none |
| CO-UB-PS-120 | Formwork for Foundation for Water Pump station building | 2026-07-21 → 2026-09-26 A (+67d) | 2026-07-28 → 2026-09-27 A (+61d) | 0% → 100% | 0d → none |
| CO-UB-PS-130 | Steel fixing for Foundation for Water Pump station building | 2026-07-29 → 2026-09-27 A (+60d) | 2026-08-04 → 2026-09-28 A (+55d) | 0% → 100% | 0d → none |
| CO-UB-PS-140 | pouring for Foundation for Water Pump station building | 2026-08-05 → 2026-10-14 (+70d) | 2026-08-05 → 2026-10-14 (+70d) |  | 0d → none |
| CO-UB-PS-150 | curing and deshuttering formwork Pump station building | 2026-08-06 → 2026-10-15 (+70d) | 2026-08-13 → 2026-10-22 (+70d) |  | 0d → none |
| CO-UB-PS-160 | Backfilling and compaction work for pump station | 2026-08-15 → 2026-10-24 (+70d) | 2026-08-18 → 2026-10-27 (+70d) |  | 0d → none |
| 2 | **Super structure** | 2026-08-19 → 2026-10-28 (+70d) | 2026-09-30 → 2026-12-08 (+69d) |  |  |
| CO-UB-PS-170 | Formwork for Wall and columns for Water Pump station building | 2026-08-19 → 2026-10-28 (+70d) | 2026-08-24 → 2026-11-02 (+70d) |  | 0d → none |
| CO-UB-PS-180 | Steel fixing for Wall columns | 2026-08-25 → 2026-11-03 (+70d) | 2026-08-29 → 2026-11-07 (+70d) |  | 0d → none |
| CO-UB-PS-190 | pouring for Wall columns | 2026-08-30 → 2026-11-08 (+70d) | 2026-08-30 → 2026-11-08 (+70d) |  | 0d → none |
| CO-UB-PS-200 | curing and deshuttering formwork for Wall columns | 2026-08-31 → 2026-11-09 (+70d) | 2026-09-07 → 2026-11-16 (+70d) |  | 0d → none |
| CO-UB-PS-210 | Waterproofing for Walls columns | 2026-09-08 → 2026-11-17 (+70d) | 2026-09-09 → 2026-11-18 (+70d) |  | 0d → none |
| CO-UB-PS-220 | Formwork for pump roof | 2026-09-10 → 2026-11-19 (+70d) | 2026-09-14 → 2026-11-23 (+70d) |  | 0d → none |
| CO-UB-PS-230 | Steel fixing for pump roof | 2026-09-15 → 2026-11-24 (+70d) | 2026-09-19 → 2026-11-28 (+70d) |  | 0d → none |
| CO-UB-PS-240 | pouring for pump roof | 2026-09-20 → 2026-11-29 (+70d) | 2026-09-21 → 2026-11-30 (+70d) |  | 0d → none |
| CO-UB-PS-250 | curing and deshuttering formwork for pump roof | 2026-09-22 → 2026-12-01 (+70d) | 2026-09-30 → 2026-12-08 (+69d) |  | 0d → none |
| 2 | **Architectural work** | 2026-10-01 → 2026-12-09 (+69d) | 2026-11-04 → 2027-01-12 (+69d) |  |  |
| CO-UB-PS-260 | Executing Masonry Works for Water Pump station building | 2026-10-01 → 2026-12-09 (+69d) | 2026-10-08 → 2026-12-16 (+69d) |  | 0d → none |
| CO-UB-PS-270 | Executing Plastering Works for Pump station building | 2026-10-10 → 2026-12-17 (+68d) | 2026-10-17 → 2026-12-24 (+68d) |  | 0d → none |
| CO-UB-PS-280 | Executing Painting and Finishes Works for Pump station building | 2026-10-18 → 2026-12-26 (+69d) | 2026-10-26 → 2027-01-03 (+69d) |  | 0d → none |
| CO-UB-PS-320 | Doors and windows Fixing &Stair Tiles | 2026-10-27 → 2027-01-04 (+69d) | 2026-11-04 → 2027-01-12 (+69d) |  | 0d → none |
| 4 | **Mechanical work** | 2026-12-31 → 2027-04-10 (+100d) | 2027-02-10 → 2027-05-26 (+105d) |  |  |
| CO-UB-PS-340 | Executing HVAC System for Water Pump station building | 2026-12-31 → 2027-04-10 (+100d) | 2027-01-11 → 2027-04-20 (+99d) |  | 0d → none |
| CO-UB-PS-360 | Executing Fire fighting institution works(piping and wire installation) for Water Pump station building | 2027-01-12 → 2027-04-21 (+99d) | 2027-01-23 → 2027-05-02 (+99d) |  | 0d → none |
| CO-UB-PS-380 | Executing Plummbing works for Water Pump station building | 2027-01-24 → 2027-05-03 (+99d) | 2027-02-03 → 2027-05-13 (+99d) |  | 0d → none |
| CO-UB-PS-390 | Installation of pumps | 2027-02-04 → 2027-05-20 (+105d) | 2027-02-10 → 2027-05-26 (+105d) |  | 0d → none |
| 3 | **Sewage Lift Station** | 2026-10-27 → 2026-08-29 (-59d) | 2027-02-28 → 2027-04-21 (+52d) |  |  |
| 1 | **Civil work** | 2026-10-27 → 2026-08-29 (-59d) | 2027-02-24 → 2027-04-18 (+53d) |  |  |
| 1 | **Sup Structure** | 2026-10-27 → 2026-08-29 (-59d) | 2026-12-21 → 2027-02-08 (+49d) |  |  |
| CO-UB-LS-220 | Excavation Work for Sewage Lift Station | 2026-10-27 → 2026-08-29 A (-59d) | 2026-11-05 → 2026-08-31 A (-66d) | 0% → 100% | 4d → none |
| CO-UB-LS-230 | pouring P.C Conceret for Sewage Lift Station | 2026-11-07 → 2026-09-01 A (-67d) | 2026-11-08 → 2026-09-02 A (-67d) | 0% → 100% | 4d → none |
| CO-UB-LS-240 | Formwork for Foundation for Sewage Lift Station | 2026-11-09 → 2026-09-03 A (-67d) | 2026-11-22 → 2027-01-12 (+51d) | 0% → 80% | 4d → none |
| CO-UB-LS-250 | Steel fixing for Foundation for Sewage Lift Station | 2026-11-23 → 2026-09-03 A (-81d) | 2026-12-03 → 2027-01-21 (+49d) | 0% → 80% | 4d → none |
| CO-UB-LS-260 | pouring for Foundationfor Sewage Lift Station | 2026-12-05 → 2026-09-03 A (-93d) | 2026-12-06 → 2027-01-24 (+49d) | 0% → 80% | 4d → none |
| CO-UB-LS-270 | curing and deshuttering formwork for Sewage Lift Station | 2026-12-07 → 2026-09-03 A (-95d) | 2026-12-14 → 2027-02-01 (+49d) | 0% → 80% | 4d → none |
| CO-UB-LS-280 | Backfilling and compaction work for Sewage Lift Station | 2026-12-15 → 2026-09-03 A (-103d) | 2026-12-21 → 2027-02-08 (+49d) | 0% → 80% | 4d → none |
| 2 | **Super structure** | 2026-12-22 → 2027-02-09 (+49d) | 2027-02-24 → 2027-04-18 (+53d) |  |  |
| CO-UB-LS-290 | Formwork for Wall and columns for Sewage Lift Station | 2026-12-22 → 2027-02-09 (+49d) | 2027-01-02 → 2027-02-20 (+49d) |  | 4d → none |
| CO-UB-LS-300 | Steel fixing for Wall columns | 2027-01-03 → 2027-02-21 (+49d) | 2027-01-12 → 2027-03-02 (+49d) |  | 4d → none |
| CO-UB-LS-310 | pouring for Wall columns | 2027-01-13 → 2027-03-03 (+49d) | 2027-01-13 → 2027-03-03 (+49d) |  | 4d → none |
| CO-UB-LS-320 | curing and deshuttering formwork for Wall columns | 2027-01-14 → 2027-03-04 (+49d) | 2027-01-21 → 2027-03-15 (+53d) |  | 4d → none |
| CO-UB-LS-330 | Waterproofing for Walls columns | 2027-01-23 → 2027-03-16 (+52d) | 2027-01-26 → 2027-03-20 (+53d) |  | 4d → none |
| CO-UB-LS-340 | Formwork for pump roof | 2027-01-27 → 2027-03-21 (+53d) | 2027-02-02 → 2027-03-27 (+53d) |  | 4d → none |
| CO-UB-LS-350 | Steel fixing for pump roof | 2027-02-03 → 2027-03-28 (+53d) | 2027-02-09 → 2027-04-03 (+53d) |  | 4d → none |
| CO-UB-LS-360 | pouring for pump roof | 2027-02-10 → 2027-04-04 (+53d) | 2027-02-10 → 2027-04-04 (+53d) |  | 4d → none |
| CO-UB-LS-370 | curing and deshuttering formwork for pump roof | 2027-02-11 → 2027-04-05 (+53d) | 2027-02-24 → 2027-04-18 (+53d) |  | 4d → none |
| 2 | **Architectural work** | 2027-02-25 → 2027-04-19 (+53d) | 2027-02-28 → 2027-04-21 (+52d) |  |  |
| CO-UB-LS-390 | Executing Plastering and Finishes Works for Sewage Lift Station | 2027-02-25 → 2027-04-19 (+53d) | 2027-02-28 → 2027-04-21 (+52d) |  | 4d → none |
| 5 | **Potable Water Tank** | 2026-10-18 → 2026-12-26 (+69d) | 2027-01-14 → 2027-03-28 (+73d) |  |  |
| 1 | **Eearth Work** | 2026-10-18 → 2026-12-26 (+69d) | 2026-11-11 → 2027-01-19 (+69d) |  |  |
| CO-UB-PWT-100 | Excavation work for tank foundation tank formation level for Potable Water Tank | 2026-10-18 → 2026-12-26 (+69d) | 2026-10-31 → 2027-01-07 (+68d) |  | 26d → none |
| CO-UB-PWT-110 | Soil replacement Up to tank formation level for Potable Water Tank | 2026-11-01 → 2027-01-09 (+69d) | 2026-11-11 → 2027-01-19 (+69d) |  | 26d → none |
| 2 | **Structural Work** | 2026-11-12 → 2027-01-20 (+69d) | 2026-12-29 → 2027-03-08 (+69d) |  |  |
| CO-UB-PWT-120 | Plain Concrete works for Potable Water Tank | 2026-11-12 → 2027-01-20 (+69d) | 2026-11-19 → 2027-01-27 (+69d) |  | 26d → none |
| CO-UB-PWT-130 | Form work for Tank Foundation for Potable Water Tank | 2026-11-21 → 2027-01-28 (+68d) | 2026-12-03 → 2027-02-10 (+69d) |  | 26d → none |
| CO-UB-PWT-140 | Steel Reinforcement work for Tank Foundation for Potable Water Tank | 2026-12-05 → 2027-02-11 (+68d) | 2026-12-17 → 2027-02-24 (+69d) |  | 26d → none |

| ID | Task | Start | Finish | Total float |
| --- | --- | --- | --- | --- |
| CO-UB-PWT-150 | Casting concrete for Tank Foundation for Potable Water Tank | 2026-12-19 → 2027-02-25 (+68d) | 2026-12-29 → 2027-03-08 (+69d) | 26d → none |
| 3 | **Tank Shell Erection&Roof Installation** | 2026-12-30 → 2027-03-13 (+73d) | 2027-01-14 → 2027-03-28 (+73d) |  |
| CO-UB-PWT-170 | shell erection for Potable Water Tank | 2026-12-30 → 2027-03-13 (+73d) | 2027-01-14 → 2027-03-28 (+73d) | 26d → none |
| 2 | **IrrigationTank** | 2026-11-01 → 2027-01-09 (+69d) | 2027-01-13 → 2027-03-27 (+73d) |  |
| 1 | **Eearth Work** | 2026-11-01 → 2027-01-09 (+69d) | 2026-11-25 → 2027-02-02 (+69d) |  |
| CO-UB-IRT-140 | Excavation work for tank foundation tank formation level for Irrigation Tank | 2026-11-01 → 2027-01-09 (+69d) | 2026-11-14 → 2027-01-21 (+68d) | 27d → none |
| CO-UB-IRT-150 | Soil replacement Up to tank formation level for Irrigation Tank | 2026-11-15 → 2027-01-23 (+69d) | 2026-11-25 → 2027-02-02 (+69d) | 27d → none |
| 2 | **Structural Work** | 2026-11-26 → 2027-02-03 (+69d) | 2026-12-28 → 2027-03-07 (+69d) |  |
| CO-UB-IRT-160 | Plain Concrete works for Irrigation Tank | 2026-11-26 → 2027-02-03 (+69d) | 2026-11-29 → 2027-02-06 (+69d) | 27d → none |
| CO-UB-IRT-170 | Form work for Tank Foundation for Irrigation Tank | 2026-11-30 → 2027-02-07 (+69d) | 2026-12-10 → 2027-02-17 (+69d) | 27d → none |
| CO-UB-IRT-180 | Steel Reinforcement work for Tank Foundation for Irrigation Tank | 2026-12-12 → 2027-02-18 (+68d) | 2026-12-23 → 2027-03-02 (+69d) | 27d → none |
| CO-UB-IRT-190 | Casting concrete for Tank Foundation for Irrigation Tank | 2026-12-24 → 2027-03-03 (+69d) | 2026-12-28 → 2027-03-07 (+69d) | 27d → none |
| 3 | **Tank Shell Erection&Roof Installation** | 2026-12-29 → 2027-03-08 (+69d) | 2027-01-13 → 2027-03-27 (+73d) |  |
| CO-UB-IRT-210 | shell erection for Irrigation Tank | 2026-12-29 → 2027-03-08 (+69d) | 2027-01-13 → 2027-03-27 (+73d) | 27d → none |
| 1 | **Control Room** | 2026-08-24 → 2026-11-29 (+97d) | 2027-02-23 → 2027-05-31 (+97d) |  |
| 5 | **Civil Work** | 2026-08-24 → 2026-11-29 (+97d) | 2026-10-27 → 2027-01-31 (+96d) |  |
| CO-UB-CR-100 | Excavation Work For Control Room Foundation | 2026-08-24 → 2026-11-29 (+97d) | 2026-08-31 → 2026-12-06 (+97d) | 7d → none |
| CO-UB-CR-110 | Pouring for Plain Concrete | 2026-09-01 → 2026-12-07 (+97d) | 2026-09-06 → 2026-12-12 (+97d) | 7d → none |
| CO-UB-CR-120 | Pouring R.C Footing For Control Room | 2026-09-07 → 2026-12-13 (+97d) | 2026-10-01 → 2027-01-05 (+96d) | 7d → none |
| CO-UB-CR-130 | Pouring R.C Columns For Control Room | 2026-10-03 → 2027-01-06 (+95d) | 2026-10-15 → 2027-01-19 (+96d) | 7d → none |
| CO-UB-CR-140 | Pouring Beams and Slab For Control Room | 2026-10-17 → 2027-01-20 (+95d) | 2026-10-27 → 2027-01-31 (+96d) | 7d → none |
| 6 | **Finishing Work** | 2026-11-05 → 2027-02-01 (+88d) | 2027-02-23 → 2027-05-31 (+97d) |  |
| 1 | **Architictural work** | 2026-11-05 → 2027-02-01 (+88d) | 2026-12-23 → 2027-03-24 (+91d) |  |
| CO-UB-CR-150 | Brick Work For Control Room | 2026-11-05 → 2027-02-01 (+88d) | 2026-11-16 → 2027-02-11 (+87d) | 0d → none |
| CO-UB-CR-160 | Thermal & Moisture Protection Work for Control Room | 2026-11-17 → 2027-02-13 (+88d) | 2026-11-24 → 2027-02-20 (+88d) | 0d → none |
| CO-UB-CR-200 | Install For Curtian Wall and Windows and Doors | 2026-11-25 → 2027-02-21 (+88d) | 2026-12-02 → 2027-02-28 (+88d) | 0d → none |
| CO-UB-CR-240 | External Finshing Work (Walls and Floor) | 2026-12-03 → 2027-03-01 (+88d) | 2026-12-12 → 2027-03-13 (+91d) | 0d → none |
| CO-UB-CR-250 | Internal Finshing Work (Walls,Floor and Ceiling) | 2026-12-13 → 2027-03-14 (+91d) | 2026-12-23 → 2027-03-24 (+91d) | 0d → none |
| 3 | **Mechanical Work** | 2026-11-17 → 2027-02-13 (+88d) | 2027-02-08 → 2027-05-10 (+91d) |  |
| 3 | **HVAC System** | 2026-11-17 → 2027-02-13 (+88d) | 2027-02-08 → 2027-05-10 (+91d) |  |
| CO-UB-CR-170 | Install of Refrigerant Piping ( fabricated metal ducts with flanges complete with supports, vanes, dampers ) | 2026-11-17 → 2027-02-13 (+88d) | 2026-12-10 → 2027-03-08 (+88d) | 1d → none |
| CO-UB-CR-260 | Install of Mini split actual and Ducted split | 2026-12-24 → 2027-03-25 (+91d) | 2027-01-16 → 2027-04-17 (+91d) | 7d → none |
| CO-UB-CR-310 | Install of Air Grills 150mm x150mm and Air Diffuser 600mm x 600mm | 2027-01-17 → 2027-04-18 (+91d) | 2027-02-08 → 2027-05-10 (+91d) | 7d → none |
| 4 | **Fire Fitting System** | 2026-12-12 → 2027-03-13 (+91d) | 2026-12-30 → 2027-03-31 (+91d) |  |
| CO-UB-CR-180 | Installation & Testing of 2 hours Fire rated system for closing the openings between rooms with help of Rock wool | 2026-12-12 → 2027-03-13 (+91d) | 2026-12-22 → 2027-03-23 (+91d) | 1d → none |
| CO-UB-CR-270 | Install Fire Extinguishers | 2026-12-24 → 2027-03-25 (+91d) | 2026-12-30 → 2027-03-31 (+91d) | 6d → none |
| 1 | **Plumbing System** | 2026-12-24 → 2027-03-25 (+91d) | 2027-01-06 → 2027-04-07 (+91d) |  |
| CO-UB-CR-370 | Install of Sanitary Wares Including Relevant Pipes and Fittings | 2026-12-24 → 2027-03-25 (+91d) | 2027-01-06 → 2027-04-07 (+91d) | 0d → none |
| 4 | **Electrical Work** | 2026-12-24 → 2027-03-25 (+91d) | 2027-02-16 → 2027-05-24 (+97d) |  |
| 1 | **LV Power** | 2026-12-24 → 2027-03-25 (+91d) | 2027-02-11 → 2027-05-13 (+91d) |  |
| CO-UB-CR-190 | Install of Distribution board For Control Room | 2026-12-24 → 2027-03-25 (+91d) | 2027-01-04 → 2027-04-05 (+91d) | 4d → none |
| CO-UB-CR-220 | Install of Earting Cable for Control Room | 2027-01-05 → 2027-04-06 (+91d) | 2027-01-20 → 2027-04-21 (+91d) | 4d → none |
| CO-UB-CR-280 | Install of Socket outlet and LED Lighting | 2027-01-21 → 2027-04-22 (+91d) | 2027-02-11 → 2027-05-13 (+91d) | 4d → none |
| 3 | **Fire Detection And Alarm System** | 2027-01-07 → 2027-04-08 (+91d) | 2027-02-16 → 2027-05-24 (+97d) |  |
| CO-UB-CR-210 | Install of 2C x 1.5 Sqm FR Rated Armored - Cable For Loop Wiring | 2027-01-07 → 2027-04-08 (+91d) | 2027-01-11 → 2027-04-12 (+91d) | 0d → none |
| CO-UB-CR-230 | Install of Transmission Communication cable - Fiber Optics 12Core | 2027-01-12 → 2027-04-13 (+91d) | 2027-01-16 → 2027-04-17 (+91d) | 0d → none |
| CO-UB-CR-290 | Install of power supply system for fire alarm control panel | 2027-01-17 → 2027-04-18 (+91d) | 2027-01-20 → 2027-04-21 (+91d) | 0d → none |
| CO-UB-CR-300 | Install of Fire Alarm Control panel | 2027-01-21 → 2027-04-22 (+91d) | 2027-01-27 → 2027-04-28 (+91d) | 0d → none |
| CO-UB-CR-320 | Installation of the addressable manual call point with operation safety glass breaking | 2027-01-28 → 2027-04-29 (+91d) | 2027-01-31 → 2027-05-02 (+91d) | 0d → none |
| CO-UB-CR-330 | Install of the photoelectric heat & smoke detector | 2027-02-01 → 2027-05-03 (+91d) | 2027-02-06 → 2027-05-08 (+91d) | 0d → none |
| CO-UB-CR-340 | Install of Sounder With Beacon | 2027-02-07 → 2027-05-09 (+91d) | 2027-02-11 → 2027-05-13 (+91d) | 0d → none |
| CO-UB-CR-350 | Install of Addressable Control module | 2027-02-13 → 2027-05-20 (+96d) | 2027-02-16 → 2027-05-24 (+97d) | 0d → none |
| 2 | **Furnitures work** | 2027-02-17 → 2027-05-25 (+97d) | 2027-02-23 → 2027-05-31 (+97d) |  |
| CO-UB-CR-360 | Office Chairs,Tables and Stand | 2027-02-17 → 2027-05-25 (+97d) | 2027-02-23 → 2027-05-31 (+97d) | 0d → none |
| ML | **Softscape and Planting Works** | 2026-12-26 → 2027-04-04 (+99d) | 2027-02-03 → 2027-05-13 (+99d) |  |
| CO-LS-PL-160 | Planting Works: Planting including plants, forming planting beds, suitable soil, supports, and protection | 2026-12-26 → 2027-04-04 (+99d) | 2027-01-11 → 2027-04-20 (+99d) | 9d → none |
| CO-LS-SF-170 | Site Furnishings (Seating Bench,Stone Boulders and Gravel) | 2027-01-12 → 2027-04-21 (+99d) | 2027-02-03 → 2027-05-13 (+99d) | 9d → none |
| 6 | **Storm Drainage Ponds** | 2026-11-05 → 2027-02-09 (+96d) | 2026-12-31 → 2027-04-10 (+100d) |  |
| CO-SD-PO-100-P1 | Excavation & Filling Works - PART 1 for Storm Drainage Ponds | 2026-11-05 → 2027-02-09 (+96d) | 2026-11-12 → 2027-02-16 (+96d) | 0d → none |
| CO-SD-PO-110-P1 | Finished Grouted Riprap - PART 1 for Storm Drainage Ponds | 2026-11-14 → 2027-02-17 (+95d) | 2026-11-22 → 2027-02-25 (+95d) | 0d → none |
| CO-SD-PO-100-P2 | Excavation & Filling Works - PART 2 for Storm Drainage Ponds | 2026-11-23 → 2027-02-27 (+96d) | 2026-12-12 → 2027-03-21 (+99d) | 5d → none |
| CO-SD-PO-110-P2 | Finished Grouted Riprap - PART 2 for Storm Drainage Ponds | 2026-12-13 → 2027-03-22 (+99d) | 2026-12-31 → 2027-04-10 (+100d) | 5d → none |
| 1 | **Boundary Fence and Gaurd Room** | 2026-08-08 → 2026-08-01 (-7d) | 2027-02-13 → 2027-05-11 (+87d) |  |
| 1 | **Gaurd Room Work** | 2026-12-13 → 2027-03-22 (+99d) | 2027-02-01 → 2027-05-11 (+99d) |  |
| 1 | **Civil Work** | 2026-12-13 → 2027-03-22 (+99d) | 2026-12-29 → 2027-04-07 (+99d) |  |
| A1000 | Excavation Work For Guard Room Foundation | 2026-12-13 → 2027-03-22 (+99d) | 2026-12-17 → 2027-03-27 (+100d) | 3d → none |
| A1010 | Pouring for Plain Concrete for Guard Room | 2026-12-19 → 2027-03-28 (+99d) | 2026-12-19 → 2027-03-28 (+99d) | 3d → none |
| A1020 | Pouring R.C Footing for Guard Room | 2026-12-20 → 2027-03-29 (+99d) | 2026-12-22 → 2027-03-31 (+99d) | 3d → none |
| A1030 | Pouring R.C Columns for Guard Room | 2026-12-23 → 2027-04-01 (+99d) | 2026-12-26 → 2027-04-04 (+99d) | 3d → none |
| A1040 | Pouring Beams and Slab for Guard Room | 2026-12-27 → 2027-04-05 (+99d) | 2026-12-29 → 2027-04-07 (+99d) | 3d → none |

| ID | Task | Start | Finish | Complete | Total float |
| --- | --- | --- | --- | --- | --- |
| 2 | **Finishing Work** | 2026-12-30 → 2027-04-08 (+99d) | 2027-02-01 → 2027-05-11 (+99d) |  |  |
| 1 | **Architectural work** | 2026-12-30 → 2027-04-08 (+99d) | 2027-01-30 → 2027-05-09 (+99d) |  |  |
| A1050 | Brick Works for Architectural Works for Guard Rooms | 2026-12-30 → 2027-04-08 (+99d) | 2027-01-05 → 2027-04-14 (+99d) |  | 3d → none |
| A1060 | Thermal & Moisture Protection Work for Architectural Works for Guard Rooms | 2027-01-06 → 2027-04-15 (+99d) | 2027-01-11 → 2027-04-20 (+99d) |  | 3d → none |
| A1080 | External Finshing Work (Walls and Floor) for Architectural Works for Guard Rooms | 2027-01-18 → 2027-04-27 (+99d) | 2027-01-19 → 2027-04-28 (+99d) |  | 7d → none |
| A1090 | Internal Finshing Work (Walls,Floor and Ceiling) for Architectural Works for Guard Rooms | 2027-01-18 → 2027-04-27 (+99d) | 2027-01-24 → 2027-05-03 (+99d) |  | 3d → none |
| A1070 | Installation of Windows and Doors for Architectural Works for Guard Rooms | 2027-01-25 → 2027-05-04 (+99d) | 2027-01-30 → 2027-05-09 (+99d) |  | 3d → none |
| 3 | **Mechanical Work** | 2027-01-12 → 2027-04-21 (+99d) | 2027-01-20 → 2027-04-29 (+99d) |  |  |
| 1 | **Drainage System** | 2027-01-12 → 2027-04-21 (+99d) | 2027-01-20 → 2027-04-29 (+99d) |  |  |
| A1110 | Installation of Sewage Piping System complete with joints, angles, reducer etc. for Drainage System for Guard Rooms | 2027-01-12 → 2027-04-21 (+99d) | 2027-01-16 → 2027-04-25 (+99d) |  | 4d → none |
| A1120 | Installation of all Sanitary Ware for Drainage System for Guard Rooms | 2027-01-17 → 2027-04-26 (+99d) | 2027-01-20 → 2027-04-29 (+99d) |  | 11d → none |
| 2 | **Water Supply System** | 2027-01-12 → 2027-04-21 (+99d) | 2027-01-20 → 2027-04-29 (+99d) |  |  |
| A1140 | Installation of Water Piping System complete with joints, angles, reducer etc. for Water Supply System for Guard Rooms | 2027-01-12 → 2027-04-21 (+99d) | 2027-01-14 → 2027-04-24 (+100d) |  | 5d → none |
| A1180 | Installation oF Water Supply Wares (Water Heater, Faucets, Etc..) for Water Supply System for Guard Rooms | 2027-01-16 → 2027-04-25 (+99d) | 2027-01-17 → 2027-04-26 (+99d) |  | 14d → none |
| A1240 | Installation of water tanks for Water Supply System for Guard Rooms | 2027-01-20 → 2027-04-29 (+99d) | 2027-01-20 → 2027-04-29 (+99d) |  | 13d → none |
| 3 | **HVAC System** | 2027-01-12 → 2027-04-21 (+99d) | 2027-01-14 → 2027-04-24 (+100d) |  |  |
| A1200 | Installation of AC Piping for HVAC System for Guard Rooms | 2027-01-12 → 2027-04-21 (+99d) | 2027-01-13 → 2027-04-22 (+99d) |  | 6d → none |
| A1190 | Installation of AC Units for HVAC System for Guard Rooms | 2027-01-14 → 2027-04-24 (+100d) | 2027-01-14 → 2027-04-24 (+100d) |  | 16d → none |
| 4 | **Fire Fighting System** | 2027-01-12 → 2027-04-21 (+99d) | 2027-01-14 → 2027-04-24 (+100d) |  |  |
| A1220 | Installation & Testing of 2 hours Fire Fighting system for Fire Fighting System for Guard Rooms | 2027-01-12 → 2027-04-21 (+99d) | 2027-01-13 → 2027-04-22 (+99d) |  | 6d → none |
| A1230 | Installation of Fire Extinguishers for Fire Fighting System for Guard Rooms | 2027-01-14 → 2027-04-24 (+100d) | 2027-01-14 → 2027-04-24 (+100d) |  | 16d → none |
| 4 | **Electrical Work** | 2027-01-12 → 2027-04-21 (+99d) | 2027-01-24 → 2027-05-03 (+99d) |  |  |
| 1 | **LV Power** | 2027-01-12 → 2027-04-21 (+99d) | 2027-01-21 → 2027-05-01 (+100d) |  |  |
| A1250 | Installation of Conduits and Cables for LV System for Gaurd Rooms | 2027-01-12 → 2027-04-21 (+99d) | 2027-01-17 → 2027-04-26 (+99d) |  | 3d → none |
| A1260 | Install of Eletrical Finishes (DBs, Sockets and Lightings) and Termination for LV System for Gaurd Rooms | 2027-01-18 → 2027-04-27 (+99d) | 2027-01-21 → 2027-05-01 (+100d) |  | 10d → none |
| 3 | **Fire Detection And Alarm System** | 2027-01-12 → 2027-04-21 (+99d) | 2027-01-24 → 2027-05-03 (+99d) |  |  |
| A1340 | Installation of Conduits and Cables for Fire Alarm System for Gaurd Rooms | 2027-01-12 → 2027-04-21 (+99d) | 2027-01-17 → 2027-04-26 (+99d) |  | 3d → none |
| A1350 | Installation of Fire Alarm Devices (AMCP, SD,HD, Sounder and Panels) for Fire Alarm System for Gaurd Rooms | 2027-01-18 → 2027-04-27 (+99d) | 2027-01-24 → 2027-05-03 (+99d) |  | 8d → none |
| 2 | **Furniture work** | 2027-01-31 → 2027-05-10 (+99d) | 2027-02-01 → 2027-05-11 (+99d) |  |  |
| A1100 | Office Chairs,Tables and Stand | 2027-01-31 → 2027-05-10 (+99d) | 2027-02-01 → 2027-05-11 (+99d) |  | 3d → none |
| 3 | **Boundary Fence** | 2026-08-08 → 2026-08-01 (-7d) | 2027-02-13 → 2027-05-11 (+87d) |  |  |
| 2 | **Boundary Fence - South** | 2026-08-08 → 2026-08-01 (-7d) | 2027-01-26 → 2027-04-03 (+67d) |  |  |
| 1 | **Civil Work** | 2026-08-08 → 2026-08-01 (-7d) | 2026-10-28 → 2026-12-30 (+63d) |  |  |
| CO-SU-FE-N-CI-100 | Excavation Work For Boundary Fence South | 2026-08-08 → 2026-08-01 A (-7d) | 2026-08-25 → 2026-08-03 A (-22d) | 0% → 100% | 1d → none |
| CO-SU-FE-N-CI-110 | Pouring for Plain Concrete For Boundary Fence South | 2026-08-26 → 2026-08-08 A (-18d) | 2026-09-10 → 2026-08-13 A (-28d) | 0% → 100% | 1d → none |
| CO-SU-FE-N-CI-120 | Pouring R.C Footing For Boundary Fence South | 2026-09-12 → 2026-08-15 A (-28d) | 2026-09-26 → 2026-08-22 A (-35d) | 0% → 100% | 1d → none |
| CO-SU-FE-N-CI-130 | Pouring R.C Columns For Boundary Fence South | 2026-09-27 → 2026-09-26 A (-1d) | 2026-10-14 → 2026-12-16 (+63d) | 0% → 65% | 1d → none |
| CO-SU-FE-N-CI-140 | Pouring Beams For Boundary Fence South | 2026-10-15 → 2026-12-17 (+63d) | 2026-10-28 → 2026-12-30 (+63d) |  | 1d → none |
| 5 | **Finishing Work** | 2026-10-29 → 2026-12-31 (+63d) | 2027-01-26 → 2027-04-03 (+67d) |  |  |
| 4 | **Architictural work** | 2026-10-29 → 2026-12-31 (+63d) | 2027-01-02 → 2027-03-06 (+63d) |  |  |
| CO-SU-FE-N-AR-100 | Install Brick Work For Boundary Fence South | 2026-10-29 → 2026-12-31 (+63d) | 2026-11-19 → 2027-01-21 (+63d) |  | 1d → none |
| CO-SU-FE-N-AR-110 | Insulation For Boundary Fence South | 2026-12-06 → 2027-02-07 (+63d) | 2026-12-22 → 2027-02-23 (+63d) |  | 1d → none |
| CO-SU-FE-N-AR-120 | Install all the Relevant Cladding and Finishes For Boundary Fence South | 2026-12-23 → 2027-02-24 (+63d) | 2027-01-02 → 2027-03-06 (+63d) |  | 5d → none |
| 3 | **Electrical Work** | 2026-11-21 → 2027-01-23 (+63d) | 2027-01-26 → 2027-04-03 (+67d) |  |  |
| CO-SU-FE-N-EL-240 | Installation of Conduits and Cables for Electricial Works For Boundary Fence South | 2026-11-21 → 2027-01-23 (+63d) | 2026-12-05 → 2027-02-06 (+63d) |  | 1d → none |
| CO-SU-FE-N-EL-250 | Install, fixings, testing of all electrical finishes and lightings for Electricial Works For Boundary Fence South | 2027-01-03 → 2027-03-07 (+63d) | 2027-01-26 → 2027-04-03 (+67d) |  | 5d → none |
| 1 | **Boundary Fence - West** | 2026-08-26 → 2026-08-01 (-25d) | 2027-02-06 → 2027-04-13 (+66d) |  |  |
| 1 | **Civil Work** | 2026-08-26 → 2026-08-01 (-25d) | 2026-11-19 → 2027-01-18 (+60d) |  |  |
| CO-SU-FE-N-CI-150 | Excavation Work For Boundary Fence West | 2026-08-26 → 2026-08-01 A (-25d) | 2026-09-13 → 2026-08-04 A (-40d) | 0% → 100% | 1d → none |
| CO-SU-FE-N-CI-160 | Pouring for Plain Concrete For Boundary Fence West | 2026-09-14 → 2026-08-05 A (-40d) | 2026-09-29 → 2026-08-10 A (-50d) | 0% → 100% | 1d → none |
| CO-SU-FE-N-CI-170 | Pouring R.C Footing For Boundary Fence West | 2026-09-30 → 2026-08-11 A (-50d) | 2026-10-18 → 2026-08-19 A (-60d) | 0% → 100% | 1d → none |
| CO-SU-FE-N-CI-180 | Pouring R.C Columns For Boundary Fence West | 2026-10-19 → 2026-09-26 A (-23d) | 2026-11-05 → 2027-01-04 (+60d) | 0% → 65% | 1d → none |
| CO-SU-FE-N-CI-190 | Pouring Beams For Boundary Fence West | 2026-11-07 → 2027-01-05 (+59d) | 2026-11-19 → 2027-01-18 (+60d) |  | 1d → none |
| 5 | **Finishing Work** | 2026-11-21 → 2027-01-23 (+63d) | 2027-02-06 → 2027-04-13 (+66d) |  |  |
| 4 | **Architictural work** | 2026-11-21 → 2027-01-23 (+63d) | 2027-01-19 → 2027-03-27 (+67d) |  |  |
| CO-SU-FE-N-AR-130 | Install Brick Work For Boundary Fence West | 2026-11-21 → 2027-01-23 (+63d) | 2026-12-08 → 2027-02-09 (+63d) |  | 1d → none |
| CO-SU-FE-N-AR-140 | Insulation For Boundary Fence West | 2026-12-23 → 2027-02-24 (+63d) | 2027-01-05 → 2027-03-13 (+67d) |  | 1d → none |
| CO-SU-FE-N-AR-150 | Install all the Relevant Cladding and Finishes For Boundary Fence West | 2027-01-06 → 2027-03-14 (+67d) | 2027-01-19 → 2027-03-27 (+67d) |  | 2d → none |
| 3 | **Electrical Work** | 2026-12-09 → 2027-02-10 (+63d) | 2027-02-06 → 2027-04-13 (+66d) |  |  |
| CO-SU-FE-N-EL-260 | Installation of Conduits and Cables for Electricial Works For Boundary Fence West | 2026-12-09 → 2027-02-10 (+63d) | 2026-12-17 → 2027-02-18 (+63d) |  | 5d → none |
| CO-SU-FE-N-EL-270 | Install, fixings, testing of all electrical finishes and lightings for Electricial Works For Boundary Fence West | 2027-01-27 → 2027-04-04 (+67d) | 2027-02-06 → 2027-04-13 (+66d) |  | 5d → none |
| 3 | **Boundary Fence - North** | 2026-09-14 → 2026-08-01 (-44d) | 2027-02-02 → 2027-04-10 (+67d) |  |  |
| 1 | **Civil Work** | 2026-09-14 → 2026-08-01 (-44d) | 2026-12-08 → 2027-02-06 (+60d) |  |  |
| CO-SU-FE-N-CI-200 | Excavation Work For Boundary Fence North | 2026-09-14 → 2026-08-01 A (-44d) | 2026-10-03 → 2026-08-04 A (-60d) | 0% → 100% | 1d → none |
| CO-SU-FE-N-CI-210 | Pouring for Plain Concrete For Boundary Fence North | 2026-10-04 → 2026-08-05 A (-60d) | 2026-10-18 → 2026-08-11 A (-68d) | 0% → 100% | 1d → none |
| CO-SU-FE-N-CI-220 | Pouring R.C Footing For Boundary Fence North | 2026-10-19 → 2026-08-11 A (-69d) | 2026-11-05 → 2026-09-02 A (-64d) | 0% → 100% | 1d → none |
| CO-SU-FE-N-CI-230 | Pouring R.C Columns For Boundary Fence North | 2026-11-07 → 2026-09-26 A (-42d) | 2026-11-24 → 2027-01-23 (+60d) | 0% → 65% | 1d → none |
| CO-SU-FE-N-CI-240 | Pouring Beams For Boundary Fence North | 2026-11-25 → 2027-01-24 (+60d) | 2026-12-08 → 2027-02-06 (+60d) |  | 1d → none |
| 5 | **Finishing Work** | 2026-12-09 → 2027-02-10 (+63d) | 2027-02-02 → 2027-04-10 (+67d) |  |  |
| 4 | **Architictural work** | 2026-12-09 → 2027-02-10 (+63d) | 2027-01-26 → 2027-04-03 (+67d) |  |  |

| ID | Task | Start | Finish | Complete | Total float |
| --- | --- | --- | --- | --- | --- |
| CO-SU-FE-N-AR-160 | Install Brick Work For Boundary Fence North | 2026-12-09 → 2027-02-10 (+63d) | 2026-12-24 → 2027-02-25 (+63d) |  | 1d → none |
| CO-SU-FE-N-AR-170 | Insulation For Boundary Fence North | 2027-01-06 → 2027-03-14 (+67d) | 2027-01-18 → 2027-03-25 (+66d) |  | 1d → none |
| CO-SU-FE-N-AR-180 | Install all the Relevant Cladding and Finishes For Boundary Fence North | 2027-01-20 → 2027-03-28 (+67d) | 2027-01-26 → 2027-04-03 (+67d) |  | 2d → none |
| 3 | **Electrical Work** | 2026-12-26 → 2027-02-27 (+63d) | 2027-02-02 → 2027-04-10 (+67d) |  |  |
| CO-SU-FE-N-EL-280 | Installation of Conduits and Cables for Electricial Works For Boundary Fence North | 2026-12-26 → 2027-02-27 (+63d) | 2027-01-02 → 2027-03-06 (+63d) |  | 4d → none |
| CO-SU-FE-N-EL-290 | Install, fixings, testing of all electrical finishes and lightings for Electricial Works For Boundary Fence North | 2027-01-27 → 2027-04-04 (+67d) | 2027-02-02 → 2027-04-10 (+67d) |  | 5d → none |
| 4 | **Boundary Fence - East** | 2026-10-04 → 2026-09-26 (-8d) | 2027-02-13 → 2027-05-11 (+87d) |  |  |
| 1 | **Civil Work** | 2026-10-04 → 2026-09-26 (-8d) | 2026-12-24 → 2027-02-22 (+60d) |  |  |
| CO-SU-FE-N-CI-280 | Pouring R.C Columns For Boundary Fence East | 2026-11-25 → 2026-09-26 A (-60d) | 2026-12-13 → 2027-02-10 (+59d) | 0% → 65% | 1d → none |
| CO-SU-FE-N-CI-250 | Excavation Work For Boundary Fence East | 2026-10-04 → 2026-12-19 A (+76d) | 2026-10-21 → 2026-12-07 (+47d) | 0% → 75% | 1d → none |
| CO-SU-FE-N-CI-260 | Pouring for Plain Concrete For Boundary Fence East | 2026-10-22 → 2027-01-06 A (+76d) | 2026-11-05 → 2026-12-13 (+38d) | 0% → 75% | 1d → none |
| CO-SU-FE-N-CI-270 | Pouring R.C Footing For Boundary Fence East | 2026-11-07 → 2027-01-21 A (+75d) | 2026-11-24 → 2026-12-19 (+25d) | 0% → 75% | 1d → none |
| CO-SU-FE-N-CI-290 | Pouring Beams For Boundary Fence East | 2026-12-14 → 2027-02-11 (+59d) | 2026-12-24 → 2027-02-22 (+60d) |  | 1d → none |
| 5 | **Finishing Work** | 2026-12-26 → 2027-03-23 (+87d) | 2027-02-13 → 2027-05-11 (+87d) |  |  |
| 4 | **Architictural work** | 2026-12-26 → 2027-03-23 (+87d) | 2027-02-07 → 2027-05-05 (+87d) |  |  |
| CO-SU-FE-N-AR-190 | Install Brick Work For Boundary Fence East | 2026-12-26 → 2027-03-23 (+87d) | 2027-01-06 → 2027-04-04 (+88d) |  | 1d → none |
| CO-SU-FE-N-AR-200 | Insulation For Boundary Fence East | 2027-01-19 → 2027-04-17 (+88d) | 2027-01-27 → 2027-04-25 (+88d) |  | 1d → none |
| CO-SU-FE-N-AR-210 | Install all the Relevant Cladding and Finishes For Boundary Fence East | 2027-01-28 → 2027-04-26 (+88d) | 2027-02-07 → 2027-05-05 (+87d) |  | 1d → none |
| 3 | **Electrical Work** | 2027-01-07 → 2027-04-05 (+88d) | 2027-02-13 → 2027-05-11 (+87d) |  |  |
| CO-SU-FE-N-EL-300 | Installation of Conduits and Cables for Electricial Works For Boundary Fence East | 2027-01-07 → 2027-04-05 (+88d) | 2027-01-18 → 2027-04-15 (+87d) |  | 1d → none |
| CO-SU-FE-N-EL-310 | Install, fixings, testing of all electrical finishes and lightings for Electricial Works For Boundary Fence East | 2027-02-08 → 2027-05-06 (+87d) | 2027-02-13 → 2027-05-11 (+87d) |  | 1d → none |
| TC | **Testing and Comissioning** | 2027-02-02 → 2027-05-12 (+99d) | 2027-03-03 → 2027-06-14 (+103d) |  |  |
| INF | **Infrastructure Networks** | 2027-02-07 → 2027-05-23 (+105d) | 2027-02-24 → 2027-06-09 (+105d) |  |  |
| LV | **Low Voltage Network** | 2027-02-11 → 2027-05-27 (+105d) | 2027-02-24 → 2027-06-09 (+105d) |  |  |
| TC-LV-100 | Testing and Commissioning of Low Voltage Network | 2027-02-11 → 2027-05-27 (+105d) | 2027-02-24 → 2027-06-09 (+105d) |  | 0d → none |
| PW1 | **Irrigation Network** | 2027-02-11 → 2027-05-27 (+105d) | 2027-02-24 → 2027-06-09 (+105d) |  |  |
| T/C-IR | Testing and Commissioning of Irrigation Network | 2027-02-11 → 2027-05-27 (+105d) | 2027-02-24 → 2027-06-09 (+105d) |  | 0d → none |
| PW11 | **TSE Network** | 2027-02-11 → 2027-05-27 (+105d) | 2027-02-24 → 2027-06-09 (+105d) |  |  |
| T/C-TSE-10 | Testing and Commissioning of TSE Network | 2027-02-11 → 2027-05-27 (+105d) | 2027-02-24 → 2027-06-09 (+105d) |  | 0d → none |
| PW | **Potable Water Network** | 2027-02-11 → 2027-05-27 (+105d) | 2027-02-24 → 2027-06-09 (+105d) |  |  |
| T/C-PW | Testing and Commissioning of Potable Water Network | 2027-02-11 → 2027-05-27 (+105d) | 2027-02-24 → 2027-06-09 (+105d) |  | 0d → none |
| SW | **Sewage Network** | 2027-02-11 → 2027-05-27 (+105d) | 2027-02-24 → 2027-06-09 (+105d) |  |  |
| T/C-SW | Testing and Commissioning of Sewage Network | 2027-02-11 → 2027-05-27 (+105d) | 2027-02-24 → 2027-06-09 (+105d) |  | 0d → none |
| SD | **Storm Drainage Network** | 2027-02-11 → 2027-05-27 (+105d) | 2027-02-24 → 2027-06-09 (+105d) |  |  |
| T/C-DPO | Testing and Commissioning of Storm Drainage Ponds | 2027-02-11 → 2027-05-27 (+105d) | 2027-02-24 → 2027-06-09 (+105d) |  | 0d → none |
| T/C-SD | Testing and Commissioning of Storm Drainage Ponds and Storm Drainage Network | 2027-02-11 → 2027-05-27 (+105d) | 2027-02-24 → 2027-06-09 (+105d) |  | 0d → none |
| SL | **Street Lighting Network** | 2027-02-07 → 2027-05-23 (+105d) | 2027-02-20 → 2027-06-05 (+105d) |  |  |
| T/C-SL | Testing and Commissioning of Street Lighting Network | 2027-02-07 → 2027-05-23 (+105d) | 2027-02-20 → 2027-06-05 (+105d) |  | 4d → none |
| TE | **Telecom and Light Current Network** | 2027-02-07 → 2027-05-23 (+105d) | 2027-02-20 → 2027-06-05 (+105d) |  |  |
| T/C-TE | Testing and Commissioning of Telecom and Light Current Networks | 2027-02-07 → 2027-05-23 (+105d) | 2027-02-20 → 2027-06-05 (+105d) |  | 4d → none |
| MV | **Medium Voltage Network** | 2027-02-07 → 2027-05-23 (+105d) | 2027-02-20 → 2027-06-05 (+105d) |  |  |
| T/C-MV | Testing and Commissioning of Medium Voltage Network | 2027-02-07 → 2027-05-23 (+105d) | 2027-02-20 → 2027-06-05 (+105d) |  | 4d → none |
| RD | **Road Works** | 2027-02-07 → 2027-05-23 (+105d) | 2027-02-20 → 2027-06-05 (+105d) |  |  |
| T/C-RD | Testing and Commissioning of Road Works | 2027-02-07 → 2027-05-23 (+105d) | 2027-02-20 → 2027-06-05 (+105d) |  | 3d → none |
| 1 | **Utility Buildings** | 2027-02-02 → 2027-05-12 (+99d) | 2027-03-03 → 2027-06-14 (+103d) |  |  |
| T/C-CTV | Testing and Commissioning of Guard Room and Boundary Fence | 2027-02-02 → 2027-05-12 (+99d) | 2027-02-20 → 2027-06-05 (+105d) |  | 3d → none |
| T/C-CTV20 | Testing and Commissioning of Softscape And Planting | 2027-02-04 → 2027-05-20 (+105d) | 2027-02-22 → 2027-06-07 (+105d) |  | 9d → none |
| T/C-CTV10 | Testing and Commissioning of Utility Buildings | 2027-02-14 → 2027-05-27 (+102d) | 2027-03-03 → 2027-06-14 (+103d) |  | 1d → none |
| 1 | **Handing over and close out** | 2027-02-07 → 2027-05-23 (+105d) | 2027-03-04 → 2027-06-17 (+105d) |  |  |
| 2 | **As-Built** | 2027-02-07 → 2027-05-23 (+105d) | 2027-03-04 → 2027-06-17 (+105d) |  |  |
| HO-140 | Submission As-Built Drawing For Roads Network | 2027-02-07 → 2027-05-23 (+105d) | 2027-02-17 → 2027-06-02 (+105d) |  | 13d → none |
| HO-150 | Submission As-Built Drawing For Street Lighting Network | 2027-02-07 → 2027-05-23 (+105d) | 2027-02-17 → 2027-06-02 (+105d) |  | 13d → none |
| HO-160 | Submission As-Built Drawing For Telecom and Light Current Networks | 2027-02-07 → 2027-05-23 (+105d) | 2027-02-17 → 2027-06-02 (+105d) |  | 13d → none |
| HO-100 | Submission As-Built Drawing For Sewage Network | 2027-02-11 → 2027-05-27 (+105d) | 2027-02-22 → 2027-06-07 (+105d) |  | 9d → none |
| HO-130 | Submission As-Built Drawing For Pond | 2027-02-11 → 2027-05-27 (+105d) | 2027-02-22 → 2027-06-07 (+105d) |  | 9d → none |
| HO-180 | Submission As-Built Drawing For Irrigation Network | 2027-02-11 → 2027-05-27 (+105d) | 2027-02-22 → 2027-06-07 (+105d) |  | 9d → none |
| HO-200 | Submission As-Built Drawing For Storm Network | 2027-02-11 → 2027-05-27 (+105d) | 2027-02-22 → 2027-06-07 (+105d) |  | 9d → none |
| HO-210 | Submission As-Built Drawing For Utility Buildings | 2027-02-24 → 2027-06-06 (+102d) | 2027-03-04 → 2027-06-14 (+102d) |  | 0d → none |
| HO-170 | Submission As-Built Drawing For Medium Voltage Network | 2027-02-25 → 2027-06-10 (+105d) | 2027-03-04 → 2027-06-17 (+105d) |  | 0d → none |
| HO-190 | As-Built Drawing For Potable Water Network | 2027-02-25 → 2027-06-10 (+105d) | 2027-03-04 → 2027-06-17 (+105d) |  | 0d → none |
| 1 | **De-Mobilization Works** | 2027-02-09 → 2027-05-25 (+105d) | 2027-03-01 → 2027-06-14 (+105d) |  |  |
| HO-230 | Remove Temporary Car Shades | 2027-02-09 → 2027-05-25 (+105d) | 2027-02-20 → 2027-06-05 (+105d) |  | 11d → none |
| HO-220 | Removing Portable Caravan | 2027-02-13 → 2027-05-29 (+105d) | 2027-02-20 → 2027-06-05 (+105d) |  | 3d → none |
| HO-120 | Remove material stock & Storage area | 2027-02-21 → 2027-06-06 (+105d) | 2027-03-01 → 2027-06-14 (+105d) |  | 3d → none |
| 3 | **Handing Over** | 2027-02-11 → 2027-05-27 (+105d) | 2027-03-04 → 2027-06-17 (+105d) |  |  |
| HO-240 | Final Walkthrough and Inspection | 2027-02-11 → 2027-05-27 (+105d) | 2027-02-20 → 2027-06-05 (+105d) |  | 11d → none |
| HO-250 | Review B.O.Q Qty. to ensure compliance with the actual status | 2027-02-11 → 2027-05-27 (+105d) | 2027-02-20 → 2027-06-05 (+105d) |  | 11d → none |
| HO-260 | Review FIR Approval to ensure compliance with the actual status | 2027-02-11 → 2027-05-27 (+105d) | 2027-02-20 → 2027-06-05 (+105d) |  | 11d → none |
| HO-270 | Review the sample drawing to ensure compliance with the actual status | 2027-02-11 → 2027-05-27 (+105d) | 2027-02-20 → 2027-06-05 (+105d) |  | 3d → none |
| HO-280 | Punch List Completion | 2027-02-21 → 2027-06-06 (+105d) | 2027-03-01 → 2027-06-14 (+105d) |  | 3d → none |

| ID | Task | Start | Finish | Total float |
| --- | --- | --- | --- | --- |
| HO-110 | Final Testing Work | 2027-02-25 → 2027-06-10 (+105d) | 2027-03-04 → 2027-06-17 (+105d) | 0d → none |

## Version 3 (data date 2026-10-19, saved 2026-11-01, file DHRT-01-001-BL00.R01-65-up.xer)

Note of the change: Renumber project folders 01–23 in order (after removing projects 12 and 25)

Last finish 2027-06-17 → 2027-07-08 (+21d). Complete tasks 268 → 301.

Changed:

| ID | Task | Start | Finish | Complete | Other |
| --- | --- | --- | --- | --- | --- |
| MS | **Key Milestones** |  | 2027-06-17 → 2027-07-08 (+21d) |  |  |
| CM | **Contractual Milestones** |  | 2027-06-17 → 2027-07-08 (+21d) |  |  |
| MS-CF-ENG | Completion of Submitting and Approval of Shopdrawing and Materials | 2026-10-25 → 2026-11-15 (+21d) | 2026-10-25 → 2026-11-15 (+21d) |  |  |
| MS-CF-SW | Completion of Construction Works for Sewage Network | 2027-02-08 → 2027-02-25 (+17d) | 2027-02-08 → 2027-02-25 (+17d) |  |  |
| MS-CF-MV | Completion of Construction Works for Medium Voltage Network | 2027-03-22 → 2027-04-10 (+19d) | 2027-03-22 → 2027-04-10 (+19d) |  |  |
| MS-MO-20 | Completion of Storm Drainage Ponds | 2027-04-10 → 2027-04-28 (+18d) | 2027-04-10 → 2027-04-28 (+18d) |  |  |
| MS-CF-SD | Completion of Construction Works for Storm Drainage Network | 2027-04-15 → 2027-05-04 (+19d) | 2027-04-15 → 2027-05-04 (+19d) |  |  |
| MS-CF-SL | Completion of Construction Works for Street Lighting Network | 2027-04-15 → 2027-05-04 (+19d) | 2027-04-15 → 2027-05-04 (+19d) |  |  |
| MS-CF-IR | Completion of Construction Works for Irrigation Network | 2027-04-15 → 2027-05-05 (+20d) | 2027-04-15 → 2027-05-05 (+20d) |  |  |
| MS-CF-LO | Completion of Construction Works for Low Voltage Network | 2027-04-15 → 2027-05-05 (+20d) | 2027-04-15 → 2027-05-05 (+20d) |  |  |
| MS-CF-PW | Completion of Construction Works for Potable Water Network | 2027-04-15 → 2027-05-05 (+20d) | 2027-04-15 → 2027-05-05 (+20d) |  |  |
| MS-CF-RD | Completion of Construction Works for Road Works | 2027-04-15 → 2027-05-05 (+20d) | 2027-04-15 → 2027-05-05 (+20d) |  |  |
| MS-CF-TE | Completion of Construction Works for Telecom and Light Current Networks | 2027-04-15 → 2027-05-05 (+20d) | 2027-04-15 → 2027-05-05 (+20d) |  |  |
| MS-CF-TSE | Completion of Construction Works for Treated Sewage Effluent Network | 2027-05-03 → 2027-05-29 (+26d) | 2027-05-03 → 2027-05-29 (+26d) |  |  |
| MS-MO-60 | Completion of Irrigation and Potable Tank | 2027-05-23 → 2027-06-13 (+21d) | 2027-05-23 → 2027-06-13 (+21d) |  |  |
| MS-MO-10 | Completion of Sewage Pump Station | 2027-05-26 → 2027-06-16 (+21d) | 2027-05-26 → 2027-06-16 (+21d) |  |  |
| MS-MO-50 | Completion of Water Pump Station | 2027-05-26 → 2027-06-16 (+21d) | 2027-05-26 → 2027-06-16 (+21d) |  |  |
| MS-MO-40 | Completion of Control Room | 2027-06-14 → 2027-07-05 (+21d) | 2027-06-14 → 2027-07-05 (+21d) |  |  |
| MS-CF-PF | Project Completion Date | 2027-06-17 → 2027-07-08 (+21d) | 2027-06-17 → 2027-07-08 (+21d) |  |  |
| CM1 | **Control Milestones** |  | 2026-09-28 → 2026-10-19 (+21d) |  |  |
| 2 | **The Employer** |  | 2026-09-28 → 2026-10-19 (+21d) |  |  |
| MS-MM-120 | Receipt of Advance Payment for the Project From The Employer | 2026-09-28 → 2026-10-19 (+21d) | 2026-09-28 → 2026-10-19 (+21d) |  |  |
| ENG | **Engineering Works** |  | 2026-10-25 → 2026-11-15 (+21d) |  |  |
| SD11 | **Material Submittals and Approvals** |  | 2026-10-25 → 2026-11-15 (+21d) |  |  |
| ENG-MT-TSE-CV-A-150 | Material Approval for Works for Control Room |  |  |  | resources CB-UPS-01 panel; Supply, install and connection of a SCADA server cum workstation complete with network rack, network switch, sensors, printer, armoured cables with cable tray & conduits, level transmitter, liquid flow meter, quality sensor (COD,BOD,pH), pressure transmit; Fire Alarm Control panel with fire alarm zoning with Mimic panel with fire alarm zoning; Supply, install to site and installation of the Aspirating Smoke Detector complete with accessories and pipes; Supply, install to site and installation of the addressable manual call point with operation safety glass breaking and pushbutton; Supply, install to site and installation of the photoelectric smoke detector with base; Supply, install to site and installation of the heat detector with base; Supply, install to site and installation of multi criteria sensors with base; Supply, install to site and installation of Hydrogen detector; Supply, install to site and installation of Duct detector; Sounder With Beacon; Remote LED Indicator; Single Channel Interface Module; Addressable Control module for Sounders; Addressable relay module for interface; Addressable monitor module for interface; Supply, install to site and installation Fire loop cable; Supply, install to site and installation of power cable; Fire Fighter’s Telephone Centre; Fireman’s Telephone Jack; Voice Command Center; DACT (Auto - Dailer) for 24x7 Civil Defence; Transmission Communication cable - Fiber Optics; Transmission Communication cable - Ethernet Cable; Supply, install to site and installation of power supply system for fire alarm control panel; acoustical tiles suspended ceiling 600x600mm concealed metal; 100 mm thickness lean concrete under the foundation; Foundation; Grade Beams; Beams; Columns; Slabs; Lightweight Concrete Roof insulation as per Architect's specification; Hollow Concrete masonry unit, 100 mm thick wall for internal block; Hollow Concrete masonry unit, 150 mm thick wall for internal block; Insulated brickwork. with expanded polystyrene 200mm thick for External block; Hollow Concrete masonry unit, 300 mm thick wall for External block; 2 perpendicular layers of cold bitumen coats; 2 layer of 4mm HDPE membrane, 2 perpendicular layers cold bitumen coats; 1 layer EPOXY Paint 300 micron; Membrane fully bonded to prime deck and upstand; Geotextile Filter membrane uv resistance; 85mm thick thermal insulation; 1.5mm thick epdm waterproofing membrane; D1 - 1100 mm width x 2200 mm height; D2 - 1070 mm width x 2225 mm height; D3 - 1200 mm width x 3000 mm height; D4 - 1800 mm width x 3000 mm height; Roller Shuter - 3000mm width x 4000mm height; D1' 1900mm width x 2950mm height; D2' 1200mm width x 2150mm height; D3' 800mm width x 2050mm height; D4' 1700mm width x 2050mm height; 1500 mm width x 1200 mm high (W01); 1200 mm width x 1200 mm high (W02); 1000 mm width x 2400 mm high (L1); Supply and install External plastering to walls and columns min. 15mm thick with cement mortar of specified grade including galvanized mesh, corner beads, angle beads, CE bonds to rough and smooth plaster complete the work as per drawing & specification.; Supply and install 2 coats of weatherproof paint at walls including one prime coat and two coats and putty to give smooth Surface as a base for paint including fiberglass tape to joints and all other accessories as per manufacturers approved specification; Supply and install internal plastering to walls and columns min. 15mm thick with cement mortar of specified grade including galvanized mesh, corner beads, angle beads, CE bonds to rough and smooth plaster complete the work as per drawing & specification.; Supply and install 2 coats of epoxy paint at walls including one prime coat and two coats and putty to give smooth Surface as a base for paint including fiberglass tape to joints and all other accessories as per manufacturers approved specification; Supply and install 300*300mm glazed ceramic wall tiles on cement mortar and including rough and smooth plaster, galvanized mesh, corner beads, angle beads, CE bonds; Acid Proof Tiles; Supply and install 600*600mm porcelain tiles with approved quality on 30 mm mortar including sand fill material as approved by the Client; Supply and install 12.5mm thk, gypsum board suspended ceiling including suspension system, paints as required specification and material as approved by the Client including frames supports, access openings and all other accessories to complete as shown in; 4.5 KG CO2 Type Fire Extinguishers; 6 KG ABC Type Fire Extinguishers; 15 mm dia.; 25 mm dia.; 32 mm dia.; 40 mm dia.; 80 mm dia.; 200 mm dia.; 250 mm dia.; Supply and installation of western water closet, flush tank type, heavy duty, one piece SASO certified, approval of client, dimesion not less than 40 cm width, 68 cm length including all other accessories as per drawings and specification; Supply and installation of urinal, heavy duty, one piece SASO certified, approval of client, including all other accessories as per drawings and specification; Supply and installation of Bib tap with Perenial Hose (BPH) with stainless steel flexible hose and cast brass chromeplated hand including all other accessories to complete as per drawing and specification.; Supply, installation, testing and commissioning of Lavatory / wash basin with counter for toilets, built in soap dispenser, mixer, single lever arm including all accessories as per drawings and specification and to the approval of the client; Provide and install paper towel dispenser, surface mounted, satin finish stainless steel as per approved sample including accessories.; Provide and install mirror as per approved sample including frames, backing and all accessories to complete.; Provide and install towel ring, surface mounted, satin finish stainless steel as per approved sample including accessories.; Hose Bib; Valve Chamber; Retarding Chamber; Inspection Chamber; Neutralization pit 1000x1000mm; 25mm diameter; 32mm diameter; 40mm diameter; 50mm diameter; 75mm diameter; 80mm diameter; 100mm diameter; 110mm diameter; 15mm diameter; 20mm diameter; 150mm diameter; 200mm diameter; 250mm diameter; 13mm diameter; Gully Trap; Floor drain 75mm; Floor cleanout 110mm; Roof drain; GRP water tanks capacity of each 1000 liter complete with all fittings, all valves and concrete pad; Water Heater 30ltr; Actual capacity 1.0 Ton; Actual capacity 1.5 Ton; Supply and install flexible duct with insulation; size 8 inch dia.; Supply and install flexible duct with insulation; size 10 inch dia.; Package Unit 57.4 kW "thermal"; Variable Air Volume (VAV 01); Variable Air Volume (VAV 02); Variable Air Volume (VAV 03); Variable Air Volume (VAV 04); Variable Air Volume (VAV 05); Variable Air Volume (VAV 06); Galvanized sheet metal ducts; Supply Liner Slot diffuser 3 slots 1 inch; Return Liner Slot diffuser 3 slots 1 inch; Exhaust Grill 150mm x 150mm; Exhast Air fan 515 l/s @ 150 pa; Exhast Air fan 3200 l/s @ 100 pa; Sand trap louver 2400mm x 1000mm; Sound attenuator size 1050 x 650 x 1000 m; Fire suppression system FM200 57 kg fill capacity consists of 2 cylinders, duty + standby, complete with all required mechanical, electrical , and control items to install, test, and operate the system.; Fire suppression system NOVEC 1230 134.1 kg fill capacity consists of 2 cylinders, duty + standby, complete with all required mechanical, electrical , and control items to install, test, and operate the system.; Fire suppression system NOVEC 1230 29.2 kg fill capacity consists of 2 cylinders, duty + standby, complete with all required mechanical, electrical , and control items to install, test, and operate the system.; Fire suppression system NOVEC 1230 53.5 kg fill capacity consists of 2 cylinders, duty + standby, complete with all required mechanical, electrical , and control items to install, test, and operate the system.; Fire suppression system NOVEC 1230 82.3 kg fill capacity consists of 2 cylinders, duty + standby, complete with all required mechanical, electrical , and control items to install, test, and operate the system.; Fire suppression system NOVEC 1230 42.5 kg fill capacity consists of 2 cylinders, duty + standby, complete with all required mechanical, electrical , and control items to install, test, and operate the system.; Supply and install steel ladder with cage at pump room for as per drawings and specification.; Overhead Travelling Crane; lifting capacity 1.50 ton manual type all to manufacturer's detail and specifications. - PS-OC-1; Hot dipped Galvanized steel Trench Grating; Hot dipped Galvanized steel Channel Cover Plate; Steel Frame and Cover 1200 x 1200; Vent Cowl (Standard Size); Steel Handrail of 1.2m height; 30W LED linear Pendant lighting; 30W LED Emergency linear Pendant lighting; 47W LED linear Pendant lighting; 47W LED Emergency linear Pendant lighting; 13W recess mounted LED down light fitting; 13W recess emergency mounted LED down light fitting with 1.5 Hr Battery; 10.4W LED Exit light with 1.5 Hr Battery; Distribution board (MDB-PR-01); Distribution board (LPDB-PR-01); Distribution board (MDB-CB-01); Distribution board (LPDB-CR-01); 13A,1? 230V Twin socket outlet with switch; 13A,1? 230V Industrial socket outlet with switch; 13A, Twin Socket outlet, Weather Proof; 400A, 3P Disconnect switch; 30A, 2P AC Disconnect Switch; 30A, 3P AC Disconnect Switch; 60A, 3P AC Disconnect Switch; 20A Duplex Receptacle Floor Mounted; Single gang Lighting switch; Double gang Lighting switch; 2way Single gang Lighting switch; Cable Tray 300 mm X 100 mm; 4CX6 Cu. XLPE FRLSZH Cable; 4CX10 Cu. XLPE FRLSZH Cable; 4CX16 Cu. XLPE FRLSZH Cable; 4CX25 Cu. XLPE FRLSZH Cable; 4CX35 Cu. XLPE FRLSZH Cable; 4CX185 Cu. XLPE FRLSZH Cable; 120mm2 Tinned copper wire; Grounding rod 20mmX3m; Grounding rod with Pit 20mmX3m; Earthing Bar; Cu earth strip 25X4 mm; 1.5m Air terminal; 4mm2 Cu./FRLSZH Cable; 6mm2 Cu./FRLSZH Cable; 10mm2 Cu./FRLSZH Cable; 16mm2 Cu./FRLSZH Cable; 95mm2 Cu./FRLSZH Cable; 120mm2 Cu./FRLSZH Cable; 30KVA, 400V, 3PH, 60Hz UPS → 100 mm thickness lean concrete under the foundation; Foundation; Grade Beams; Beams; Columns; Slabs; Lightweight Concrete Roof insulation as per Architect's specification; Hollow Concrete masonry unit, 100 mm thick wall for internal block; Hollow Concrete masonry unit, 150 mm thick wall for internal block; Insulated brickwork. with expanded polystyrene 200mm thick for External block; Hollow Concrete masonry unit, 300 mm thick wall for External block; 2 perpendicular layers of cold bitumen coats; 2 layer of 4mm HDPE membrane, 2 perpendicular layers cold bitumen coats; 1 layer EPOXY Paint 300 micron; Membrane fully bonded to prime deck and upstand; Geotextile Filter membrane uv resistance; 85mm thick thermal insulation; 1.5mm thick epdm waterproofing membrane; D1 - 1100 mm width x 2200 mm height; D2 - 1070 mm width x 2225 mm height; D3 - 1200 mm width x 3000 mm height; D4 - 1800 mm width x 3000 mm height; Roller Shuter - 3000mm width x 4000mm height; D1' 1900mm width x 2950mm height; D2' 1200mm width x 2150mm height; D3' 800mm width x 2050mm height; D4' 1700mm width x 2050mm height; 1500 mm width x 1200 mm high (W01); 1200 mm width x 1200 mm high (W02); 1000 mm width x 2400 mm high (L1); Supply and install External plastering to walls and columns min. 15mm thick with cement mortar of specified grade including galvanized mesh, corner beads, angle beads, CE bonds to rough and smooth plaster complete the work as per drawing & specification.; Supply and install 2 coats of weatherproof paint at walls including one prime coat and two coats and putty to give smooth Surface as a base for paint including fiberglass tape to joints and all other accessories as per manufacturers approved specification; Supply and install internal plastering to walls and columns min. 15mm thick with cement mortar of specified grade including galvanized mesh, corner beads, angle beads, CE bonds to rough and smooth plaster complete the work as per drawing & specification.; Supply and install 2 coats of epoxy paint at walls including one prime coat and two coats and putty to give smooth Surface as a base for paint including fiberglass tape to joints and all other accessories as per manufacturers approved specification; Supply and install 300*300mm glazed ceramic wall tiles on cement mortar and including rough and smooth plaster, galvanized mesh, corner beads, angle beads, CE bonds; Acid Proof Tiles; Supply and install 600*600mm porcelain tiles with approved quality on 30 mm mortar including sand fill material as approved by the Client; Supply and install 12.5mm thk, gypsum board suspended ceiling including suspension system, paints as required specification and material as approved by the Client including frames supports, access openings and all other accessories to complete as shown in; 4.5 KG CO2 Type Fire Extinguishers; 6 KG ABC Type Fire Extinguishers; 15 mm dia.; 25 mm dia.; 32 mm dia.; 40 mm dia.; 80 mm dia.; 200 mm dia.; 250 mm dia.; Supply and installation of western water closet, flush tank type, heavy duty, one piece SASO certified, approval of client, dimesion not less than 40 cm width, 68 cm length including all other accessories as per drawings and specification; Supply and installation of urinal, heavy duty, one piece SASO certified, approval of client, including all other accessories as per drawings and specification; Supply and installation of Bib tap with Perenial Hose (BPH) with stainless steel flexible hose and cast brass chromeplated hand including all other accessories to complete as per drawing and specification.; Supply, installation, testing and commissioning of Lavatory / wash basin with counter for toilets, built in soap dispenser, mixer, single lever arm including all accessories as per drawings and specification and to the approval of the client; Provide and install paper towel dispenser, surface mounted, satin finish stainless steel as per approved sample including accessories.; Provide and install mirror as per approved sample including frames, backing and all accessories to complete.; Provide and install towel ring, surface mounted, satin finish stainless steel as per approved sample including accessories.; Hose Bib; Valve Chamber; Retarding Chamber; Inspection Chamber; Neutralization pit 1000x1000mm; 25mm diameter; 32mm diameter; 40mm diameter; 50mm diameter; 75mm diameter; 80mm diameter; 100mm diameter; 110mm diameter; 15mm diameter; 20mm diameter; 150mm diameter; 200mm diameter; 250mm diameter; 13mm diameter; Gully Trap; Floor drain 75mm; Floor cleanout 110mm; Roof drain; GRP water tanks capacity of each 1000 liter complete with all fittings, all valves and concrete pad; Water Heater 30ltr; Actual capacity 1.0 Ton; Actual capacity 1.5 Ton; Supply and install flexible duct with insulation; size 8 inch dia.; Supply and install flexible duct with insulation; size 10 inch dia.; Package Unit 57.4 kW "thermal"; Variable Air Volume (VAV 01); Variable Air Volume (VAV 02); Variable Air Volume (VAV 03); Variable Air Volume (VAV 04); Variable Air Volume (VAV 05); Variable Air Volume (VAV 06); Galvanized sheet metal ducts; Supply Liner Slot diffuser 3 slots 1 inch; Return Liner Slot diffuser 3 slots 1 inch; Exhaust Grill 150mm x 150mm; Exhast Air fan 515 l/s @ 150 pa; Exhast Air fan 3200 l/s @ 100 pa; Sand trap louver 2400mm x 1000mm; Sound attenuator size 1050 x 650 x 1000 m; Fire suppression system FM200 57 kg fill capacity consists of 2 cylinders, duty + standby, complete with all required mechanical, electrical , and control items to install, test, and operate the system.; Fire suppression system NOVEC 1230 134.1 kg fill capacity consists of 2 cylinders, duty + standby, complete with all required mechanical, electrical , and control items to install, test, and operate the system.; Fire suppression system NOVEC 1230 29.2 kg fill capacity consists of 2 cylinders, duty + standby, complete with all required mechanical, electrical , and control items to install, test, and operate the system.; Fire suppression system NOVEC 1230 53.5 kg fill capacity consists of 2 cylinders, duty + standby, complete with all required mechanical, electrical , and control items to install, test, and operate the system.; Fire suppression system NOVEC 1230 82.3 kg fill capacity consists of 2 cylinders, duty + standby, complete with all required mechanical, electrical , and control items to install, test, and operate the system.; Fire suppression system NOVEC 1230 42.5 kg fill capacity consists of 2 cylinders, duty + standby, complete with all required mechanical, electrical , and control items to install, test, and operate the system.; Supply and install steel ladder with cage at pump room for as per drawings and specification.; Overhead Travelling Crane; lifting capacity 1.50 ton manual type all to manufacturer's detail and specifications. - PS-OC-1; Hot dipped Galvanized steel Trench Grating; Hot dipped Galvanized steel Channel Cover Plate; Steel Frame and Cover 1200 x 1200; Vent Cowl (Standard Size); Steel Handrail of 1.2m height; 30W LED linear Pendant lighting; 30W LED Emergency linear Pendant lighting; 47W LED linear Pendant lighting; 47W LED Emergency linear Pendant lighting; 13W recess mounted LED down light fitting; 13W recess emergency mounted LED down light fitting with 1.5 Hr Battery; 10.4W LED Exit light with 1.5 Hr Battery; Distribution board (MDB-PR-01); Distribution board (LPDB-PR-01); Distribution board (MDB-CB-01); Distribution board (LPDB-CR-01); 13A,1? 230V Twin socket outlet with switch; 13A,1? 230V Industrial socket outlet with switch; 13A, Twin Socket outlet, Weather Proof; 400A, 3P Disconnect switch; 30A, 2P AC Disconnect Switch; 30A, 3P AC Disconnect Switch; 60A, 3P AC Disconnect Switch; 20A Duplex Receptacle Floor Mounted; Single gang Lighting switch; Double gang Lighting switch; 2way Single gang Lighting switch; Cable Tray 300 mm X 100 mm; 4CX6 Cu. XLPE FRLSZH Cable; 4CX10 Cu. XLPE FRLSZH Cable; 4CX16 Cu. XLPE FRLSZH Cable; 4CX25 Cu. XLPE FRLSZH Cable; 4CX35 Cu. XLPE FRLSZH Cable; 4CX185 Cu. XLPE FRLSZH Cable; 120mm2 Tinned copper wire; Grounding rod 20mmX3m; Grounding rod with Pit 20mmX3m; Earthing Bar; Cu earth strip 25X4 mm; 1.5m Air terminal; 4mm2 Cu./FRLSZH Cable; 6mm2 Cu./FRLSZH Cable; 10mm2 Cu./FRLSZH Cable; 16mm2 Cu./FRLSZH Cable; 95mm2 Cu./FRLSZH Cable; 120mm2 Cu./FRLSZH Cable; 30KVA, 400V, 3PH, 60Hz UPS; CB-UPS-01 panel; Supply, install and connection of a SCADA server cum workstation complete with network rack, network switch, sensors, printer, armoured cables with cable tray & conduits, level transmitter, liquid flow meter, quality sensor (COD,BOD,pH), pressure transmit; Fire Alarm Control panel with fire alarm zoning with Mimic panel with fire alarm zoning; Supply, install to site and installation of the Aspirating Smoke Detector complete with accessories and pipes; Supply, install to site and installation of the addressable manual call point with operation safety glass breaking and pushbutton; Supply, install to site and installation of the photoelectric smoke detector with base; Supply, install to site and installation of the heat detector with base; Supply, install to site and installation of multi criteria sensors with base; Supply, install to site and installation of Hydrogen detector; Supply, install to site and installation of Duct detector; Sounder With Beacon; Remote LED Indicator; Single Channel Interface Module; Addressable Control module for Sounders; Addressable relay module for interface; Addressable monitor module for interface; Supply, install to site and installation Fire loop cable; Supply, install to site and installation of power cable; Fire Fighter’s Telephone Centre; Fireman’s Telephone Jack; Voice Command Center; DACT (Auto - Dailer) for 24x7 Civil Defence; Transmission Communication cable - Fiber Optics; Transmission Communication cable - Ethernet Cable; Supply, install to site and installation of power supply system for fire alarm control panel; acoustical tiles suspended ceiling 600x600mm concealed metal |
| 1 | **Long Lead Time Items** | 2026-09-28 → 2026-10-19 (+21d) | 2026-10-25 → 2026-11-15 (+21d) |  |  |
| 2 | **Superstructure Works** | 2026-09-28 → 2026-10-19 (+21d) | 2026-10-25 → 2026-11-15 (+21d) |  |  |
| SL | **Sewage Pump Stations** | 2026-09-28 → 2026-10-19 (+21d) | 2026-10-11 → 2026-11-01 (+21d) |  |  |
| 1 | **Submission of Material** | 2026-09-28 → 2026-10-19 (+21d) | 2026-10-04 → 2026-10-25 (+21d) |  |  |
| ENG-MT-SPS-MC-S-100 | Material Submittal for Electromechanical Works for Pump Station | 2026-09-28 → 2026-10-19 (+21d) | 2026-10-04 → 2026-10-25 (+21d) |  |  |
| 2 | **Approval of Material** | 2026-10-05 → 2026-10-26 (+21d) | 2026-10-11 → 2026-11-01 (+21d) |  |  |
| ENG-MT-SPS-MC-A-110 | Material Approval for Electromechanical Works for Pump Station | 2026-10-05 → 2026-10-26 (+21d) | 2026-10-11 → 2026-11-01 (+21d) |  |  |
| SL1 | **Storage Tank (TSE)** | 2026-09-28 → 2026-10-19 (+21d) | 2026-10-25 → 2026-11-15 (+21d) |  |  |
| 1 | **Submission of Material** | 2026-09-28 → 2026-10-19 (+21d) | 2026-10-11 → 2026-11-01 (+21d) |  |  |
| ENG-MT-TSE-MC-S-110 | Material Submittal for Electromechanical Works for Storage Tank (TSE) | 2026-09-28 → 2026-10-19 (+21d) | 2026-10-11 → 2026-11-01 (+21d) |  |  |
| 2 | **Approval of Material** | 2026-10-12 → 2026-11-02 (+21d) | 2026-10-25 → 2026-11-15 (+21d) |  |  |
| ENG-MT-TSE-MC-A-120 | Material Approval for Electromechanical Works for Storage Tank (TSE) | 2026-10-12 → 2026-11-02 (+21d) | 2026-10-25 → 2026-11-15 (+21d) |  |  |
| PROC | **Procurement Cycle** |  | 2027-05-23 → 2027-06-13 (+21d) |  |  |
| NLL | **Short Lead Time Items** |  | 2027-04-04 → 2027-04-25 (+21d) |  |  |
| INF | **Infrastructure Networks** |  | 2027-04-04 → 2027-04-25 (+21d) |  |  |
| SD | **Storm Drainage Network** | 2026-09-28 → 2026-07-01 (-89d) | 2027-02-08 → 2027-02-27 (+19d) |  |  |
| PO | **Issuance of Purchase Orders** | 2026-09-28 → 2026-07-01 (-89d) | 2026-11-04 → 2026-11-23 (+19d) |  |  |
| 1 | **Main Line Sections** | 2026-09-28 → 2026-07-01 (-89d) | 2026-10-01 → 2026-10-20 (+19d) |  |  |
| PRO-SD-PO-110 | Issuance of Purchase Order for Main Line Pipes of Storm Drainage Network | 2026-09-30 → 2026-07-01 A (-91d) | 2026-10-01 → 2026-07-02 A (-91d) | 0% → 100% |  |
| PRO-SD-PO-100 | Issuance of Purchase Order for Manholes of Storm Drainage Network | 2026-09-28 → 2026-10-19 (+21d) | 2026-09-29 → 2026-10-20 (+21d) |  |  |
| 2 | **Catch Basin Sections** | 2026-10-03 → 2026-10-21 (+18d) | 2026-10-14 → 2026-11-02 (+19d) |  |  |
| PRO-SD-PO-130 | Issuance of Purchase Order for Catch Basins of Storm Drainage Network | 2026-10-03 → 2026-10-21 (+18d) | 2026-10-07 → 2026-10-26 (+19d) |  |  |
| PRO-SD-PO-150 | Issuance of Purchase Order for Catch Basin Pipes of Storm Drainage Network | 2026-10-08 → 2026-10-27 (+19d) | 2026-10-14 → 2026-11-02 (+19d) |  |  |
| 3 | **Testing and Finishes** | 2026-10-15 → 2026-11-03 (+19d) | 2026-10-28 → 2026-11-16 (+19d) |  |  |
| PRO-SD-PO-120 | Issuance of Purchase Order for Manhole Covers of Storm Drainage Network | 2026-10-15 → 2026-11-03 (+19d) | 2026-10-21 → 2026-11-09 (+19d) |  |  |
| PRO-SD-PO-140 | Issuance of Purchase Order for Catch Basin Covers of Storm Drainage Network | 2026-10-22 → 2026-11-10 (+19d) | 2026-10-28 → 2026-11-16 (+19d) |  |  |
| TE1 | **Storm Drainage Ponds** | 2026-10-29 → 2026-11-17 (+19d) | 2026-11-04 → 2026-11-23 (+19d) |  |  |
| PRO-DPO-CV-PO-10 | Issuance of Purchase Order for Materials of Storm Drainage Ponds | 2026-10-29 → 2026-11-17 (+19d) | 2026-11-04 → 2026-11-23 (+19d) |  |  |
| MF | **Manufacturing of Material** | 2026-09-30 → 2026-07-05 (-87d) | 2027-01-18 → 2027-02-06 (+19d) |  |  |
| 1 | **Main Line Sections** | 2026-09-30 → 2026-07-05 (-87d) |  |  |  |
| PRO-SD-MF-110 | Manufacturing of Materials for Main Line Pipes of Storm Drainage Network | 2026-10-03 → 2026-07-05 A (-90d) | 2026-10-29 → 2026-07-07 A (-114d) | 0% → 100% |  |
| PRO-SD-MF-100 | Manufacturing of Materials for Manholes of Storm Drainage Network | 2026-09-30 → 2026-10-21 (+21d) | 2026-10-08 → 2026-10-29 (+21d) |  |  |
| 2 | **Catch Basin Sections** | 2026-10-08 → 2026-10-27 (+19d) | 2026-11-12 → 2026-12-01 (+19d) |  |  |
| PRO-SD-MF-130 | Manufacturing of Materials for Catch Basins of Storm Drainage Network | 2026-10-08 → 2026-10-27 (+19d) | 2026-11-05 → 2026-11-24 (+19d) |  |  |
| PRO-SD-MF-150 | Manufacturing of Materials for Catch Basin Pipes of Storm Drainage Network | 2026-10-15 → 2026-11-03 (+19d) | 2026-11-12 → 2026-12-01 (+19d) |  |  |
| 3 | **Testing and Finishes** | 2026-11-14 → 2026-12-02 (+18d) | 2027-01-10 → 2027-01-28 (+18d) |  |  |
| PRO-SD-MF-120 | Manufacturing of Materials for Manhole Covers of Storm Drainage Network | 2026-11-14 → 2026-12-02 (+18d) | 2026-12-06 → 2026-12-24 (+18d) |  |  |
| PRO-SD-MF-140 | Manufacturing of Materials for Catch Basin Covers of Storm Drainage Network | 2026-12-07 → 2026-12-26 (+19d) | 2027-01-10 → 2027-01-28 (+18d) |  |  |
| TE | **Storm Drainage Ponds** | 2026-11-05 → 2026-11-24 (+19d) | 2027-01-18 → 2027-02-06 (+19d) |  |  |
| PRO-DPO-CV-MF-10 | Manufacturing of Materials of Storm Drainage Ponds | 2026-11-05 → 2026-11-24 (+19d) | 2027-01-18 → 2027-02-06 (+19d) |  |  |
| 1DL | **1st Material Delivery & Site Inspection** | 2026-10-10 → 2026-07-08 (-94d) | 2027-01-23 → 2027-02-10 (+18d) |  |  |
| 1 | **Main Line Sections** | 2026-10-10 → 2026-07-08 (-94d) |  |  |  |
| PRO-SD-1DL-110 | 1ST Material Delivery for Main Line Pipes of Storm Drainage Network | 2026-10-31 → 2026-07-08 A (-115d) | 2026-11-03 → 2026-07-12 A (-114d) | 0% → 100% |  |
| PRO-SD-1DL-100 | 1ST Material Delivery for Manholes of Storm Drainage Network | 2026-10-10 → 2026-10-31 (+21d) | 2026-10-13 → 2026-11-03 (+21d) |  |  |
| 2 | **Catch Basin Sections** | 2026-11-07 → 2026-11-25 (+18d) | 2026-11-17 → 2026-12-06 (+19d) |  |  |

| ID | Task | Start | Finish | Complete |
| --- | --- | --- | --- | --- |
| PRO-SD-1DL-130 | 1ST Material Delivery for Catch Basins of Storm Drainage Network | 2026-11-07 → 2026-11-25 (+18d) | 2026-11-10 → 2026-11-29 (+19d) |  |
| PRO-SD-1DL-120 | 1ST Material Delivery for Catch Basin Pipes of Storm Drainage Network | 2026-11-14 → 2026-12-02 (+18d) | 2026-11-17 → 2026-12-06 (+19d) |  |
| 3 | **Testing and Finishes** | 2026-12-07 → 2026-12-26 (+19d) | 2027-01-14 → 2027-02-02 (+19d) |  |
| PRO-SD-1DL-140 | 1ST Material Delivery for Manholes Covers of Storm Drainage Network | 2026-12-07 → 2026-12-26 (+19d) | 2026-12-10 → 2026-12-29 (+19d) |  |
| PRO-SD-1DL-150 | 1ST Material Delivery for Catch Basin Covers of Storm Drainage Network | 2027-01-11 → 2027-01-30 (+19d) | 2027-01-14 → 2027-02-02 (+19d) |  |
| TE2 | **Storm Drainage Ponds** | 2027-01-19 → 2027-02-07 (+19d) | 2027-01-23 → 2027-02-10 (+18d) |  |
| PRO-DPO-CV-1DL-10 | 1ST Material Delivery for Materials of Drainage Ponds | 2027-01-19 → 2027-02-07 (+19d) | 2027-01-23 → 2027-02-10 (+18d) |  |
| DL | **Material Delivery & Site Inspection** | 2026-10-14 → 2026-07-20 (-86d) | 2027-02-08 → 2027-02-27 (+19d) |  |
| 1 | **Main Line Sections** | 2026-10-14 → 2026-07-20 (-86d) | 2026-11-21 → 2026-12-02 (+11d) |  |
| PRO-R25-SD-DL-120 | Material Delivery & Site Inspection of Main Line Pipes of Storm Drainage Network | 2026-11-04 → 2026-07-20 A (-107d) | 2026-11-21 → 2026-12-02 (+11d) | 0% → 95% |
| PRO-R25-SD-DL-100 | Material Delivery & Site Inspection of Manholes of Storm Drainage Network | 2026-10-14 → 2026-11-04 (+21d) | 2026-10-25 → 2026-11-15 (+21d) |  |
| 2 | **Catch Basin Sections** | 2026-11-11 → 2026-11-30 (+19d) | 2026-11-28 → 2026-12-16 (+18d) |  |
| PRO-R25-SD-DL-130 | Material Delivery & Site Inspection of Catch Basins for Storm Drainage Network | 2026-11-11 → 2026-11-30 (+19d) | 2026-11-19 → 2026-12-08 (+19d) |  |
| PRO-R25-SD-DL-110 | Material Delivery & Site Inspection of Catch Basin Pipes for Storm Drainage Network | 2026-11-21 → 2026-12-09 (+18d) | 2026-11-28 → 2026-12-16 (+18d) |  |
| 3 | **Testing and Finishes** | 2026-12-12 → 2026-12-30 (+18d) | 2027-01-31 → 2027-02-18 (+18d) |  |
| PRO-R25-SD-DL-140 | Material Delivery & Site Inspection of Manholes Covers for Storm Drainage Network | 2026-12-12 → 2026-12-30 (+18d) | 2027-01-03 → 2027-01-21 (+18d) |  |
| PRO-R25-SD-DL-150 | Material Delivery & Site Inspection of Catch Basin Covers for Storm Drainage Network | 2027-01-16 → 2027-02-03 (+18d) | 2027-01-31 → 2027-02-18 (+18d) |  |
| TE3 | **Storm Drainage Ponds** | 2027-01-24 → 2027-02-11 (+18d) | 2027-02-08 → 2027-02-27 (+19d) |  |
| PRO-DPO-CV-DL-10 | Material Delivery & Site Inspection for Materials of Storm Drainage Ponds | 2027-01-24 → 2027-02-11 (+18d) | 2027-02-08 → 2027-02-27 (+19d) |  |
| SW | **Sewage Network** | 2026-09-28 → 2026-10-19 (+21d) | 2026-11-14 → 2026-12-05 (+21d) |  |
| PO | **Issuance of Purchase Orders** | 2026-09-28 → 2026-10-19 (+21d) | 2026-10-21 → 2026-11-11 (+21d) |  |
| 1 | **Main Line Sections** | 2026-09-28 → 2026-10-19 (+21d) | 2026-10-13 → 2026-11-03 (+21d) |  |
| PRO-SW-PO-100 | Issuance of Purchase Order for Main Line Pipes of Sewage Network | 2026-09-28 → 2026-10-19 (+21d) | 2026-10-05 → 2026-10-26 (+21d) |  |
| PRO-SW-PO-110 | Issuance of Purchase Order for Manhole of Sewage Network | 2026-10-06 → 2026-10-27 (+21d) | 2026-10-13 → 2026-11-03 (+21d) |  |
| 3 | **Testing and Finishes** | 2026-10-14 → 2026-11-04 (+21d) | 2026-10-21 → 2026-11-11 (+21d) |  |
| PRO-SW-PO-120 | Issuance of Purchase Order for Manhole Covers of Sewage Network | 2026-10-14 → 2026-11-04 (+21d) | 2026-10-21 → 2026-11-11 (+21d) |  |
| MF | **Manufacturing of Material** | 2026-10-06 → 2026-10-27 (+21d) | 2026-10-28 → 2026-11-18 (+21d) |  |
| 1 | **Main Line Sections** | 2026-10-06 → 2026-10-27 (+21d) | 2026-10-25 → 2026-11-15 (+21d) |  |
| PRO-SW-MF-100 | Manufacturing of Main Line Pipes for Sewage Network | 2026-10-06 → 2026-10-27 (+21d) | 2026-10-17 → 2026-11-07 (+21d) |  |
| PRO-SW-MF-110 | Manufacturing of Manholes for Sewage Network | 2026-10-14 → 2026-11-04 (+21d) | 2026-10-25 → 2026-11-15 (+21d) |  |
| 3 | **Testing and Finishes** | 2026-10-22 → 2026-11-12 (+21d) | 2026-10-28 → 2026-11-18 (+21d) |  |
| PRO-SW-MF-120 | Manufacturing of Manhole Covers for Sewage Network | 2026-10-22 → 2026-11-12 (+21d) | 2026-10-28 → 2026-11-18 (+21d) |  |
| 1DL | **1st Material Delivery & Site Inspection** | 2026-10-18 → 2026-11-08 (+21d) | 2026-11-04 → 2026-11-25 (+21d) |  |
| 1 | **Main Line Sections** | 2026-10-18 → 2026-11-08 (+21d) | 2026-11-02 → 2026-11-23 (+21d) |  |
| PRO-SW-1DL-100 | 1ST Material Delivery for Main Line Pipes of Sewage Network | 2026-10-18 → 2026-11-08 (+21d) | 2026-10-21 → 2026-11-11 (+21d) |  |
| PRO-SW-1DL-110 | 1ST Material Delivery for Manholes of Sewage Network | 2026-10-29 → 2026-11-19 (+21d) | 2026-11-02 → 2026-11-23 (+21d) |  |
| 3 | **Testing and Finishes** | 2026-11-03 → 2026-11-24 (+21d) | 2026-11-04 → 2026-11-25 (+21d) |  |
| PRO-SW-1DL-120 | 1ST Material Delivery for Manholes Covers of Sewage Network | 2026-11-03 → 2026-11-24 (+21d) | 2026-11-04 → 2026-11-25 (+21d) |  |
| DL | **Material Delivery & Site Inspection** | 2026-11-03 → 2026-11-24 (+21d) | 2026-11-14 → 2026-12-05 (+21d) |  |
| 1 | **Main Line Sections** | 2026-11-03 → 2026-11-24 (+21d) | 2026-11-14 → 2026-12-05 (+21d) |  |
| PRO-R25-SW-DL-110 | Material Delivery & Site Inspection of Manholes for Sewage Network | 2026-11-03 → 2026-11-24 (+21d) | 2026-11-07 → 2026-11-28 (+21d) |  |
| PRO-R25-SW-DL-100 | Material Delivery & Site Inspection of Main Line Pipes for Sewage Network | 2026-11-10 → 2026-12-01 (+21d) | 2026-11-14 → 2026-12-05 (+21d) |  |
| 3 | **Testing and Finishes** | 2026-11-05 → 2026-11-26 (+21d) | 2026-11-09 → 2026-11-30 (+21d) |  |
| PRO-R25-SW-DL-120 | Material Delivery & Site Inspection of Manholes Covers for Sewage Network | 2026-11-05 → 2026-11-26 (+21d) | 2026-11-09 → 2026-11-30 (+21d) |  |
| TSE | **Treated Sewage Effluent (Tse)** | 2026-09-28 → 2026-10-19 (+21d) | 2026-11-26 → 2026-12-17 (+21d) |  |
| PO | **Issuance of Purchase Orders** | 2026-09-28 → 2026-10-19 (+21d) | 2026-10-05 → 2026-10-26 (+21d) |  |
| PRO-TSE-PO-120 | Issuance of Purchase Order for Materials of Treated Sewage Effluent (Tse) | 2026-09-28 → 2026-10-19 (+21d) | 2026-10-05 → 2026-10-26 (+21d) |  |
| MF | **Manufacturing of Material** | 2026-10-06 → 2026-10-27 (+21d) | 2026-11-02 → 2026-11-23 (+21d) |  |
| PRO-TSE-MF-120 | Manufacturing of Materials for Treated Sewage Effluent (Tse) | 2026-10-06 → 2026-10-27 (+21d) | 2026-11-02 → 2026-11-23 (+21d) |  |
| 1DL | **1st Material Delivery & Site Inspection** | 2026-11-03 → 2026-11-24 (+21d) | 2026-11-10 → 2026-12-01 (+21d) |  |
| PRO-TSE-1DL-120 | 1ST Material Delivery for Materials of Treated Sewage Effluent (Tse) | 2026-11-03 → 2026-11-24 (+21d) | 2026-11-10 → 2026-12-01 (+21d) |  |
| DL | **Material Delivery & Site Inspection** | 2026-11-11 → 2026-12-02 (+21d) | 2026-11-26 → 2026-12-17 (+21d) |  |
| PRO-R25-TSE-DL-120 | Material Delivery & Site Inspection of Materials for Treated Sewage Effluent (Tse) | 2026-11-11 → 2026-12-02 (+21d) | 2026-11-26 → 2026-12-17 (+21d) |  |
| PW | **Potable Water Network** |  | 2027-03-02 → 2027-03-27 (+25d) |  |
| PO | **Issuance of Purchase Orders** |  | 2026-10-10 → 2026-10-31 (+21d) |  |
| 3 | **Fire Hydrant** | 2026-09-28 → 2026-10-19 (+21d) | 2026-10-03 → 2026-10-24 (+21d) |  |
| PRO-PW-PO-120 | Issuance of Purchase Order for Fire Hydrants of Potable Water Network | 2026-09-28 → 2026-10-19 (+21d) | 2026-10-03 → 2026-10-24 (+21d) |  |
| 4 | **Testing and Finishes** | 2026-10-04 → 2026-10-25 (+21d) | 2026-10-10 → 2026-10-31 (+21d) |  |
| PRO-PW-PO-130 | Issuance of Purchase Order for Surface Box of Potable Water Network | 2026-10-04 → 2026-10-25 (+21d) | 2026-10-10 → 2026-10-31 (+21d) |  |
| MF | **Manufacturing of Material** | 2026-09-28 → 2026-07-05 (-85d) | 2026-12-21 → 2026-12-28 (+7d) |  |
| 1 | **Main Line Sections** | 2026-09-28 → 2026-07-05 (-85d) | 2026-12-03 → 2026-11-15 (-18d) |  |
| PRO-PW-MF-100 | Manufacturing of Main Line Pipes and Materials for Potable Water Network | 2026-09-28 → 2026-07-05 A (-85d) | 2026-11-05 → 2026-07-07 A (-121d) | 0% → 100% |
| PRO-PW-MF-110 | Manufacturing of Valves for Potable Water Network | 2026-11-07 → 2026-10-19 (-19d) | 2026-12-03 → 2026-11-15 (-18d) |  |
| 3 | **Fire Hydrant** | 2026-12-05 → 2026-11-16 (-19d) | 2026-12-21 → 2026-12-02 (-19d) |  |
| PRO-PW-MF-120 | Manufacturing of Fire Hydrants for Potable Water Network | 2026-12-05 → 2026-11-16 (-19d) | 2026-12-21 → 2026-12-02 (-19d) |  |
| 4 | **Testing and Finishes** | 2026-10-11 → 2026-11-01 (+21d) | 2026-12-07 → 2026-12-28 (+21d) |  |
| PRO-PW-MF-130 | Manufacturing for Surface Box of Potable Water Network | 2026-10-11 → 2026-11-01 (+21d) | 2026-12-07 → 2026-12-28 (+21d) |  |
| 1DL | **1st Material Delivery & Site Inspection** | 2026-12-08 → 2026-07-12 (-149d) | 2026-12-29 → 2027-01-05 (+7d) |  |
| 1 | **Main Line Sections** | 2026-12-08 → 2026-07-12 (-149d) | 2026-12-23 → 2027-01-05 (+13d) |  |
| PRO-PW-1DL-100 | 1ST Material Delivery for Main Line Pipes and Materials of Potable Water Network | 2026-12-08 → 2026-07-12 A (-149d) | 2026-12-15 → 2026-07-16 A (-152d) | 0% → 100% |

| ID | Task | Start | Finish | Complete |
| --- | --- | --- | --- | --- |
| PRO-PW-1DL-110 | 1ST Material Delivery for Valves of Potable Water Network | 2026-12-16 → 2026-12-29 (+13d) | 2026-12-23 → 2027-01-05 (+13d) |  |
| 3 | **Fire Hydrant** | 2026-12-22 → 2026-12-29 (+7d) | 2026-12-29 → 2027-01-05 (+7d) |  |
| PRO-PW-1DL-120 | 1ST Material Delivery for Fire Hydrants of Potable Water Network | 2026-12-22 → 2026-12-29 (+7d) | 2026-12-29 → 2027-01-05 (+7d) |  |
| 4 | **Testing and Finishes** | 2026-12-08 → 2026-12-29 (+21d) | 2026-12-15 → 2027-01-05 (+21d) |  |
| PRO-PW-1DL-130 | 1ST Material Delivery for Finishes of Potable Water Network | 2026-12-08 → 2026-12-29 (+21d) | 2026-12-15 → 2027-01-05 (+21d) |  |
| DL | **Material Delivery & Site Inspection** | 2026-12-16 → 2026-10-10 (-67d) | 2027-03-02 → 2027-03-27 (+25d) |  |
| 1 | **Main Line Sections** | 2026-12-16 → 2026-10-10 (-67d) | 2027-02-02 → 2027-01-30 (-3d) |  |
| PRO-R25-PW-DL-100 | Material Delivery & Site Inspection of Main Line Pipes and Materials for Potable Water Network | 2026-12-16 → 2026-10-10 A (-67d) | 2027-01-09 A | 0% → 100% |
| PRO-R25-PW-DL-110 | Material Delivery & Site Inspection of Valves for Potable Water Network | 2027-01-10 → 2027-01-06 (-4d) | 2027-02-02 → 2027-01-30 (-3d) |  |
| 3 | **Fire Hydrant** | 2026-12-30 → 2027-01-06 (+7d) | 2027-01-05 → 2027-01-12 (+7d) |  |
| PRO-R25-PW-DL-120 | Material Delivery & Site Inspection of Fire Hydrants for Potable Water Network | 2026-12-30 → 2027-01-06 (+7d) | 2027-01-05 → 2027-01-12 (+7d) |  |
| 4 | **Testing and Finishes** | 2026-12-16 → 2027-01-06 (+21d) | 2027-03-02 → 2027-03-27 (+25d) |  |
| PRO-R25-PW-DL-130 | Material Delivery & Site Inspection for Finishes of Potable Water Network | 2026-12-16 → 2027-01-06 (+21d) | 2027-03-02 → 2027-03-27 (+25d) |  |
| IR | **Irrigation Network** | 2026-10-11 → 2026-11-01 (+21d) | 2027-01-05 → 2027-01-26 (+21d) |  |
| PO | **Issuance of Purchase Orders** | 2026-10-11 → 2026-11-01 (+21d) | 2026-10-20 → 2026-11-10 (+21d) |  |
| 1 | **Main Line Pipes** | 2026-10-11 → 2026-11-01 (+21d) | 2026-10-20 → 2026-11-10 (+21d) |  |
| PRO-IR-PO-100 | Issuance of Purchase Order for Main Line Pipes of Irrigation Network | 2026-10-11 → 2026-11-01 (+21d) | 2026-10-15 → 2026-11-05 (+21d) |  |
| PRO-IR-PO-110 | Issuance of Purchase Order for Valves of Irrigation Network | 2026-10-17 → 2026-11-07 (+21d) | 2026-10-20 → 2026-11-10 (+21d) |  |
| MF | **Manufacturing of Material** | 2026-10-17 → 2026-11-07 (+21d) | 2026-12-03 → 2026-12-24 (+21d) |  |
| 1 | **Main Line Pipes** | 2026-10-17 → 2026-11-07 (+21d) | 2026-12-03 → 2026-12-24 (+21d) |  |
| PRO-IR-MF-100 | Manufacturing of Main Line Pipes for Irrigation Network | 2026-10-17 → 2026-11-07 (+21d) | 2026-11-09 → 2026-11-30 (+21d) |  |
| PRO-IR-MF-110 | Manufacturing of Valves for Irrigation Network | 2026-11-10 → 2026-12-01 (+21d) | 2026-12-03 → 2026-12-24 (+21d) |  |
| 1DL | **1st Material Delivery & Site Inspection** | 2026-11-10 → 2026-12-01 (+21d) | 2026-12-12 → 2027-01-02 (+21d) |  |
| 1 | **Main Line Pipes** | 2026-11-10 → 2026-12-01 (+21d) | 2026-12-12 → 2027-01-02 (+21d) |  |
| PRO-IR-1DL-100 | 1ST Material Delivery for Main Line Pipes of Irrigation Network | 2026-11-10 → 2026-12-01 (+21d) | 2026-11-17 → 2026-12-08 (+21d) |  |
| PRO-IR-1DL-110 | 1ST Material Delivery for Valves of Irrigation Network | 2026-12-05 → 2026-12-26 (+21d) | 2026-12-12 → 2027-01-02 (+21d) |  |
| DL | **Material Delivery & Site Inspection** | 2026-11-18 → 2026-12-09 (+21d) | 2027-01-05 → 2027-01-26 (+21d) |  |
| 1 | **Main Line Pipes** | 2026-11-18 → 2026-12-09 (+21d) | 2027-01-05 → 2027-01-26 (+21d) |  |
| PRO-R25-IR-DL-100 | Material Delivery & Site Inspection of Main Line Pipes for Irrigation Network | 2026-11-18 → 2026-12-09 (+21d) | 2026-12-12 → 2027-01-02 (+21d) |  |
| PRO-R25-IR-DL-110 | Material Delivery & Site Inspection of Valves for Irrigation Network | 2026-12-13 → 2027-01-03 (+21d) | 2027-01-05 → 2027-01-26 (+21d) |  |
| MV | **Medium Voltage Network** | 2026-10-21 → 2026-11-11 (+21d) | 2027-01-05 → 2027-01-26 (+21d) |  |
| PO | **Issuance of Purchase Orders** | 2026-10-21 → 2026-11-11 (+21d) | 2026-10-27 → 2026-11-17 (+21d) |  |
| PRO-MV-PO-100 | Issuance of Purchase Order for Medium Voltage Materials of Medium Voltage Network | 2026-10-21 → 2026-11-11 (+21d) | 2026-10-27 → 2026-11-17 (+21d) |  |
| MF | **Manufacturing of Material** | 2026-10-28 → 2026-11-18 (+21d) | 2026-11-21 → 2026-12-12 (+21d) |  |
| PRO-MV-MF-100 | Manufacturing of Medium Voltage Materials for Medium Voltage Network | 2026-10-28 → 2026-11-18 (+21d) | 2026-11-21 → 2026-12-12 (+21d) |  |
| 1DL | **1st Material Delivery & Site Inspection** | 2026-11-22 → 2026-12-13 (+21d) | 2026-11-29 → 2026-12-20 (+21d) |  |
| PRO-MV-1DL-100 | 1ST Material Delivery for Medium Voltage Materials of Medium Voltage Network | 2026-11-22 → 2026-12-13 (+21d) | 2026-11-29 → 2026-12-20 (+21d) |  |
| DL | **Material Delivery & Site Inspection** | 2026-12-13 → 2027-01-03 (+21d) | 2027-01-05 → 2027-01-26 (+21d) |  |
| PRO-MV-DL-100 | Material Delivery & Site Inspection of Medium Voltage Materials for Medium Voltage Network | 2026-12-13 → 2027-01-03 (+21d) | 2027-01-05 → 2027-01-26 (+21d) |  |
| LV | **Low Voltage Network** | 2026-09-28 → 2026-10-19 (+21d) | 2027-03-04 → 2027-03-29 (+25d) |  |
| PO | **Issuance of Purchase Orders** | 2026-09-28 → 2026-10-19 (+21d) | 2026-10-29 → 2026-11-19 (+21d) |  |
| 1 | **Main Low Voltage Cables Works** | 2026-09-28 → 2026-10-19 (+21d) | 2026-10-05 → 2026-10-26 (+21d) |  |
| PRO-LV-ML-PO-100 | Issuance of Purchase Order for Main Low Voltage Cables of Low Voltage Network | 2026-09-28 → 2026-10-19 (+21d) | 2026-10-05 → 2026-10-26 (+21d) |  |
| 2 | **Service Low Voltage Cables Works** | 2026-09-28 → 2026-10-19 (+21d) | 2026-10-05 → 2026-10-26 (+21d) |  |
| PRO-LV-HC-PO-100 | Issuance of Purchase Order for Service Low Voltage Cables of Low Voltage Network | 2026-09-28 → 2026-10-19 (+21d) | 2026-10-05 → 2026-10-26 (+21d) |  |
| 3 | **Distribution Pillar Works** | 2026-10-06 → 2026-10-27 (+21d) | 2026-10-21 → 2026-11-11 (+21d) |  |
| PRO-LV-DP-PO-100 | Issuance of Purchase Order for Distribution Pillars of Low Voltage Network | 2026-10-06 → 2026-10-27 (+21d) | 2026-10-13 → 2026-11-03 (+21d) |  |
| PRO-LV-DP-PO-110 | Issuance of Purchase Order for Low Voltage Earthing of Low Voltage Network | 2026-10-14 → 2026-11-04 (+21d) | 2026-10-21 → 2026-11-11 (+21d) |  |
| 4 | **Termination and Testing Works** | 2026-10-22 → 2026-11-12 (+21d) | 2026-10-29 → 2026-11-19 (+21d) |  |
| PRO-LV-TT-PO-100 | Issuance of Purchase Order for Cable Lugs of Low Voltage Network | 2026-10-22 → 2026-11-12 (+21d) | 2026-10-29 → 2026-11-19 (+21d) |  |
| MF | **Manufacturing of Material** | 2026-10-06 → 2026-10-27 (+21d) | 2027-01-19 → 2027-02-09 (+21d) |  |
| 1 | **Main Low Voltage Cables Works** | 2026-10-06 → 2026-10-27 (+21d) | 2026-11-09 → 2026-11-30 (+21d) |  |
| PRO-LV-ML-MF-100 | Manufacturing of Main Low Voltage Cables for Low Voltage Network | 2026-10-06 → 2026-10-27 (+21d) | 2026-11-09 → 2026-11-30 (+21d) |  |
| 2 | **Service Low Voltage Cables Works** | 2026-10-06 → 2026-10-27 (+21d) | 2026-11-09 → 2026-11-30 (+21d) |  |
| PRO-LV-HC-MF-100 | Manufacturing of Service Low Voltage Cables for Low Voltage Network | 2026-10-06 → 2026-10-27 (+21d) | 2026-11-09 → 2026-11-30 (+21d) |  |
| 3 | **Distribution Pillar Works** | 2026-10-14 → 2026-11-04 (+21d) | 2026-12-07 → 2026-12-28 (+21d) |  |
| PRO-LV-DP-MF-100 | Manufacturing of Distribution Pillars for Low Voltage Network | 2026-10-14 → 2026-11-04 (+21d) | 2026-11-29 → 2026-12-20 (+21d) |  |
| PRO-LV-DP-MF-110 | Manufacturing of Low Voltage Earthing for Low Voltage Network | 2026-10-22 → 2026-11-12 (+21d) | 2026-12-07 → 2026-12-28 (+21d) |  |
| 4 | **Termination and Testing Works** | 2026-10-31 → 2026-11-21 (+21d) | 2027-01-19 → 2027-02-09 (+21d) |  |
| PRO-LV-TT-MF-100 | Manufacturing of Cable Lugs for Low Voltage Network | 2026-10-31 → 2026-11-21 (+21d) | 2027-01-19 → 2027-02-09 (+21d) |  |
| 1DL | **1st Delivery of Material to Site** | 2026-11-10 → 2026-12-01 (+21d) | 2027-01-20 → 2027-02-10 (+21d) |  |
| 1 | **Main Low Voltage Cables Works** | 2026-11-10 → 2026-12-01 (+21d) | 2026-12-19 → 2027-01-09 (+21d) |  |
| PRO-LV-ML-1DL-100 | 1ST Material Delivery for Main Low Voltage Cables of Low Voltage Network | 2026-11-10 → 2026-12-01 (+21d) | 2026-12-19 → 2027-01-09 (+21d) |  |
| 2 | **Service Low Voltage Cables Works** | 2026-12-20 → 2027-01-10 (+21d) | 2026-12-27 → 2027-01-17 (+21d) |  |
| PRO-LV-HC-1DL-100 | 1ST Material Delivery for Service Low Voltage Cables of Low Voltage Network | 2026-12-20 → 2027-01-10 (+21d) | 2026-12-27 → 2027-01-17 (+21d) |  |
| 3 | **Distribution Pillar Works** | 2026-12-28 → 2027-01-18 (+21d) | 2027-01-12 → 2027-02-02 (+21d) |  |
| PRO-LV-DP-1DL-100 | 1ST Material Delivery for Distribution Pillars of Low Voltage Network | 2026-12-28 → 2027-01-18 (+21d) | 2027-01-04 → 2027-01-25 (+21d) |  |
| PRO-LV-DP-1DL-110 | 1ST Material Delivery for Low Voltage Earthing of Low Voltage Network | 2027-01-05 → 2027-01-26 (+21d) | 2027-01-12 → 2027-02-02 (+21d) |  |
| 4 | **Termination and Testing Works** | 2027-01-13 → 2027-02-03 (+21d) | 2027-01-20 → 2027-02-10 (+21d) |  |
| PRO-LV-TT-1DL-100 | 1ST Material Delivery for Cable Lugs of Low Voltage Network | 2027-01-13 → 2027-02-03 (+21d) | 2027-01-20 → 2027-02-10 (+21d) |  |

| ID | Task | Start | Finish |
| --- | --- | --- | --- |
| DL | **Delivery of Material to Site** | 2026-12-20 → 2027-01-10 (+21d) | 2027-03-04 → 2027-03-29 (+25d) |
| 1 | **Main Low Voltage Cables Works** | 2026-12-20 → 2027-01-10 (+21d) | 2026-12-27 → 2027-01-17 (+21d) |
| PRO-LV-ML-DL-100 | Material Delivery of Main Low Voltage Cables for Low Voltage Network | 2026-12-20 → 2027-01-10 (+21d) | 2026-12-27 → 2027-01-17 (+21d) |
| 2 | **Service Low Voltage Cables Works** | 2026-12-28 → 2027-01-18 (+21d) | 2027-01-20 → 2027-02-10 (+21d) |
| PRO-LV-HC-DL-100 | Material Delivery of Service Low Voltage Cables for Low Voltage Network | 2026-12-28 → 2027-01-18 (+21d) | 2027-01-20 → 2027-02-10 (+21d) |
| 3 | **Distribution Pillar Works** | 2027-01-20 → 2027-02-10 (+21d) | 2027-02-11 → 2027-03-04 (+21d) |
| PRO-LV-DP-DL-120 | Material Delivery of Low Voltage Earthing for Low Voltage Network | 2027-01-20 → 2027-02-10 (+21d) | 2027-02-11 → 2027-03-04 (+21d) |
| PRO-LV-DP-DL-100 | Material Delivery of Distribution Pillars for Low Voltage Network | 2027-01-21 → 2027-02-11 (+21d) | 2027-02-11 → 2027-03-04 (+21d) |
| 4 | **Termination and Testing Works** | 2027-02-13 → 2027-03-06 (+21d) | 2027-03-04 → 2027-03-29 (+25d) |
| PRO-LV-TT-DL-100 | Material Delivery of Cable Lugs for Low Voltage Network | 2027-02-13 → 2027-03-06 (+21d) | 2027-03-04 → 2027-03-29 (+25d) |
| SL | **Street Lighting Network** | 2026-10-22 → 2026-11-12 (+21d) | 2027-03-25 → 2027-04-15 (+21d) |
| PO | **Issuance of Purchase Orders** | 2026-10-22 → 2026-11-12 (+21d) | 2026-11-10 → 2026-12-01 (+21d) |
| 1 | **Cabling Works** | 2026-10-22 → 2026-11-12 (+21d) | 2026-10-27 → 2026-11-17 (+21d) |
| PRO-SL-PO-100 | Issuance of Purchase Order for Lighting Cables of Street Lighting Network | 2026-10-22 → 2026-11-12 (+21d) | 2026-10-27 → 2026-11-17 (+21d) |
| 2 | **Lighting Poles Works** | 2026-10-22 → 2026-11-12 (+21d) | 2026-10-27 → 2026-11-17 (+21d) |
| PRO-SL-PO-110 | Issuance of Purchase Order for Lighting Poles Foundations of Street Lighting Network | 2026-10-22 → 2026-11-12 (+21d) | 2026-10-27 → 2026-11-17 (+21d) |
| PRO-SL-PO-120 | Issuance of Purchase Order for Lighting Poles of Street Lighting Network | 2026-10-22 → 2026-11-12 (+21d) | 2026-10-27 → 2026-11-17 (+21d) |
| PRO-SL-PO-140 | Issuance of Purchase Order for Lighting Fixtures of Street Lighting Network | 2026-10-22 → 2026-11-12 (+21d) | 2026-10-27 → 2026-11-17 (+21d) |
| 3 | **Distribution Panel Board** | 2026-10-22 → 2026-11-12 (+21d) | 2026-10-28 → 2026-11-18 (+21d) |
| PRO-SL-PO-160 | Issuance of Purchase Order for Distrubution Panel Boards of Street Lighting Network | 2026-10-22 → 2026-11-12 (+21d) | 2026-10-28 → 2026-11-18 (+21d) |
| 4 | **Earthing System Works** | 2026-11-04 → 2026-11-25 (+21d) | 2026-11-10 → 2026-12-01 (+21d) |
| PRO-SL-PO-150 | Issuance of Purchase Order for Lighting Earthing of Street Lighting Network | 2026-11-04 → 2026-11-25 (+21d) | 2026-11-10 → 2026-12-01 (+21d) |
| 5 | **Termination and Testing Works** | 2026-10-28 → 2026-11-18 (+21d) | 2026-11-04 → 2026-11-25 (+21d) |
| PRO-SL-PO-170 | Issuance of Purchase Order for Cable Lugs of Street Lighting Network | 2026-10-28 → 2026-11-18 (+21d) | 2026-11-03 → 2026-11-24 (+21d) |
| PRO-SL-PO-130 | Issuance of Purchase Order for Fuse Boxes of Street Lighting Network | 2026-10-29 → 2026-11-19 (+21d) | 2026-11-04 → 2026-11-25 (+21d) |
| MF | **Manufacturing of Material** | 2026-10-28 → 2026-11-18 (+21d) | 2027-02-18 → 2027-03-15 (+25d) |
| 1 | **Cabling Works** | 2026-10-28 → 2026-11-18 (+21d) | 2026-11-19 → 2026-12-10 (+21d) |
| PRO-SL-MF-100 | Manufacturing of Lighting Cables for Street Lighting Network | 2026-10-28 → 2026-11-18 (+21d) | 2026-11-19 → 2026-12-10 (+21d) |
| 2 | **Lighting Poles Works** | 2026-11-21 → 2026-12-12 (+21d) | 2026-12-14 → 2027-01-04 (+21d) |
| PRO-SL-MF-110 | Manufacturing of Lighting Poles Foundations for Street Lighting Network | 2026-11-21 → 2026-12-12 (+21d) | 2026-12-14 → 2027-01-04 (+21d) |
| PRO-SL-MF-120 | Manufacturing of Lighting Poles for Street Lighting Network | 2026-11-21 → 2026-12-12 (+21d) | 2026-12-14 → 2027-01-04 (+21d) |
| PRO-SL-MF-140 | Manufacturing of Lighting Fixtures for Street Lighting Network | 2026-11-21 → 2026-12-12 (+21d) | 2026-12-14 → 2027-01-04 (+21d) |
| 3 | **Distribution Panel Board** | 2026-12-15 → 2027-01-05 (+21d) | 2027-01-18 → 2027-02-08 (+21d) |
| PRO-SL-MF-160 | Manufacturing of Distrubution Panel Boards for Street Lighting Network | 2026-12-15 → 2027-01-05 (+21d) | 2027-01-18 → 2027-02-08 (+21d) |
| 4 | **Earthing System Works** | 2026-11-11 → 2026-12-02 (+21d) | 2026-12-27 → 2027-01-17 (+21d) |
| PRO-SL-MF-150 | Manufacturing of Lighting Earthing for Street Lighting Network | 2026-11-11 → 2026-12-02 (+21d) | 2026-12-27 → 2027-01-17 (+21d) |
| 5 | **Termination and Testing Works** | 2026-11-05 → 2026-11-26 (+21d) | 2027-02-18 → 2027-03-15 (+25d) |
| PRO-SL-MF-130 | Manufacturing of Fuse Boxes for Street Lighting Network | 2026-11-05 → 2026-11-26 (+21d) | 2027-01-25 → 2027-02-15 (+21d) |
| PRO-SL-MF-170 | Manufacturing of Cable Lugs for Street Lighting Network | 2027-01-26 → 2027-02-16 (+21d) | 2027-02-18 → 2027-03-15 (+25d) |
| 1DL | **1st Material Delivery & Site Inspection** | 2026-11-21 → 2026-12-12 (+21d) | 2027-03-04 → 2027-03-29 (+25d) |
| 1 | **Cabling Works** | 2026-11-21 → 2026-12-12 (+21d) | 2026-11-26 → 2026-12-17 (+21d) |
| PRO-SL-1DL-100 | 1ST Material Delivery for Lighting Cables of Street Lighting Network | 2026-11-21 → 2026-12-12 (+21d) | 2026-11-26 → 2026-12-17 (+21d) |
| 2 | **Lighting Poles Works** | 2026-12-15 → 2027-01-05 (+21d) | 2027-01-04 → 2027-01-25 (+21d) |
| PRO-SL-1DL-110 | 1ST Material Delivery for Lighting Poles Foundations of Street Lighting Network | 2026-12-15 → 2027-01-05 (+21d) | 2026-12-21 → 2027-01-11 (+21d) |
| PRO-SL-1DL-120 | 1ST Material Delivery for Lighting Poles of Street Lighting Network | 2026-12-22 → 2027-01-12 (+21d) | 2026-12-28 → 2027-01-18 (+21d) |
| PRO-SL-1DL-140 | 1ST Material Delivery for Lighting Fixtures of Street Lighting Network | 2026-12-29 → 2027-01-19 (+21d) | 2027-01-04 → 2027-01-25 (+21d) |
| 3 | **Distribution Panel Board** | 2027-01-19 → 2027-02-09 (+21d) | 2027-01-25 → 2027-02-15 (+21d) |
| PRO-SL-1DL-160 | 1ST Material Delivery for Distrubution Panel Boards of Street Lighting Network | 2027-01-19 → 2027-02-09 (+21d) | 2027-01-25 → 2027-02-15 (+21d) |
| 5 | **Termination and Testing Works** | 2027-01-26 → 2027-02-16 (+21d) | 2027-02-25 → 2027-03-22 (+25d) |
| PRO-SL-1DL-130 | 1ST Material Delivery for Fuse Boxes of Street Lighting Network | 2027-01-26 → 2027-02-16 (+21d) | 2027-02-01 → 2027-02-22 (+21d) |
| PRO-SL-1DL-170 | 1ST Material Delivery for Cable Lugs of Street Lighting Network | 2027-02-20 → 2027-03-16 (+24d) | 2027-02-25 → 2027-03-22 (+25d) |
| 4 | **Earthing System Works** | 2027-02-27 → 2027-03-23 (+24d) | 2027-03-04 → 2027-03-29 (+25d) |
| PRO-SL-1DL-150 | 1ST Material Delivery for Lighting Earthing of Street Lighting Network | 2027-02-27 → 2027-03-23 (+24d) | 2027-03-04 → 2027-03-29 (+25d) |
| DL | **Material Delivery & Site Inspection** | 2026-11-28 → 2026-12-19 (+21d) | 2027-03-25 → 2027-04-15 (+21d) |
| 1 | **Cabling Works** | 2026-11-28 → 2026-12-19 (+21d) | 2026-12-21 → 2027-01-11 (+21d) |
| PRO-R25-SL-DL-100 | Material Delivery & Site Inspection of Lighting Cables for Street Lighting Network | 2026-11-28 → 2026-12-19 (+21d) | 2026-12-21 → 2027-01-11 (+21d) |
| 2 | **Lighting Poles Works** | 2026-12-15 → 2027-01-05 (+21d) | 2027-02-01 → 2027-02-22 (+21d) |
| PRO-R25-SL-DL-110 | Material Delivery & Site Inspection of Lighting Poles Foundations for Street Lighting Network | 2026-12-15 → 2027-01-05 (+21d) | 2027-01-07 → 2027-01-28 (+21d) |
| PRO-R25-SL-DL-120 | Material Delivery & Site Inspection of Lighting Poles for Street Lighting Network | 2027-01-09 → 2027-01-30 (+21d) | 2027-02-01 → 2027-02-22 (+21d) |
| PRO-R25-SL-DL-140 | Material Delivery & Site Inspection of Lighting Fixtures for Street Lighting Network | 2027-01-09 → 2027-01-30 (+21d) | 2027-02-01 → 2027-02-22 (+21d) |
| 3 | **Distribution Panel Board** | 2027-02-02 → 2027-02-23 (+21d) | 2027-02-25 → 2027-03-22 (+25d) |
| PRO-R25-SL-DL-160 | Material Delivery & Site Inspection of Distrubution Panel Boards for Street Lighting Network | 2027-02-02 → 2027-02-23 (+21d) | 2027-02-25 → 2027-03-22 (+25d) |
| 4 | **Termination and Testing Works** | 2027-02-27 → 2027-03-23 (+24d) | 2027-03-25 → 2027-04-15 (+21d) |
| PRO-R25-SL-DL-130 | Material Delivery & Site Inspection of Fuse Boxes for Street Lighting Network | 2027-02-27 → 2027-03-23 (+24d) | 2027-03-25 → 2027-04-15 (+21d) |
| PRO-R25-SL-DL-170 | Material Delivery & Site Inspection of Cable Lugs for Street Lighting Network | 2027-02-27 → 2027-03-23 (+24d) | 2027-03-25 → 2027-04-15 (+21d) |
| 5 | **Earthing System Works** | 2027-02-27 → 2027-03-23 (+24d) | 2027-03-25 → 2027-04-15 (+21d) |
| PRO-R25-SL-DL-150 | Material Delivery & Site Inspection of Lighting Earthing for Street Lighting Network | 2027-02-27 → 2027-03-23 (+24d) | 2027-03-25 → 2027-04-15 (+21d) |
| TE | **Telecom and Light Current Network** | 2026-11-04 → 2026-11-25 (+21d) | 2027-02-20 → 2027-03-16 (+24d) |
| PO | **Issuance of Purchase Orders** | 2026-11-04 → 2026-11-25 (+21d) | 2026-11-26 → 2026-12-17 (+21d) |
| 1 | **Ducts Works** | 2026-11-04 → 2026-11-25 (+21d) | 2026-11-11 → 2026-12-02 (+21d) |

| ID | Task | Start | Finish |
| --- | --- | --- | --- |
| PRO-TE-PO-100 | Issuance of Purchase Order for Ducts forTelecom Network | 2026-11-04 → 2026-11-25 (+21d) | 2026-11-11 → 2026-12-02 (+21d) |
| 3 | **Manholes Works** | 2026-11-04 → 2026-11-25 (+21d) | 2026-11-11 → 2026-12-02 (+21d) |
| PRO-TE-PO-110 | Issuance of Purchase Order for Manholes forTelecom Network | 2026-11-04 → 2026-11-25 (+21d) | 2026-11-11 → 2026-12-02 (+21d) |
| 2 | **CCTV, Telephone, MSN, ACs System Works** | 2026-11-04 → 2026-11-25 (+21d) | 2026-11-26 → 2026-12-17 (+21d) |
| PRO-CTV-PO-100 | Issuance of Purchase Order for Civil and Finishes Works of CCTV Complete System | 2026-11-04 → 2026-11-25 (+21d) | 2026-11-26 → 2026-12-17 (+21d) |
| MF | **Manufacturing of Material** | 2026-11-12 → 2026-12-03 (+21d) | 2027-02-01 → 2027-02-22 (+21d) |
| 1 | **Ducts Works** | 2026-11-12 → 2026-12-03 (+21d) | 2026-12-05 → 2026-12-26 (+21d) |
| PRO-TE-MF-100 | Manufacturing of Ducts for Telecom Network | 2026-11-12 → 2026-12-03 (+21d) | 2026-12-05 → 2026-12-26 (+21d) |
| 3 | **Manholes Works** | 2026-12-06 → 2026-12-27 (+21d) | 2026-12-28 → 2027-01-18 (+21d) |
| PRO-TE-MF-110 | Manufacturing of Manholes for Telecom Network | 2026-12-06 → 2026-12-27 (+21d) | 2026-12-28 → 2027-01-18 (+21d) |
| 2 | **CCTV, Telephone, MSN, ACs System Works** | 2026-12-29 → 2027-01-19 (+21d) | 2027-02-01 → 2027-02-22 (+21d) |
| PRO-CTV-MF-100 | Manufacturing of Civil and Finishes Works for CCTV Complete System | 2026-12-29 → 2027-01-19 (+21d) | 2027-02-01 → 2027-02-22 (+21d) |
| 1DL | **1st Material Delivery & Site Inspection** | 2026-12-06 → 2026-12-27 (+21d) | 2027-02-08 → 2027-03-01 (+21d) |
| 1 | **Ducts Works** | 2026-12-06 → 2026-12-27 (+21d) | 2026-12-12 → 2027-01-02 (+21d) |
| PRO-TE-1DL-100 | 1ST Material Delivery for Ducts of Telecom Network | 2026-12-06 → 2026-12-27 (+21d) | 2026-12-12 → 2027-01-02 (+21d) |
| 3 | **Manholes Works** | 2026-12-29 → 2027-01-19 (+21d) | 2027-01-04 → 2027-01-25 (+21d) |
| PRO-TE-1DL-110 | 1ST Material Delivery for Manholes of Telecom Network | 2026-12-29 → 2027-01-19 (+21d) | 2027-01-04 → 2027-01-25 (+21d) |
| 2 | **CCTV, Telephone, MSN, ACs System Works** | 2027-02-02 → 2027-02-23 (+21d) | 2027-02-08 → 2027-03-01 (+21d) |
| PRO-CTV-1DL-100 | 1ST Material Delivery for Civil and Finishes Works of CCTV Complete System | 2027-02-02 → 2027-02-23 (+21d) | 2027-02-08 → 2027-03-01 (+21d) |
| DL | **Material Delivery & Site Inspection** | 2026-12-13 → 2027-01-03 (+21d) | 2027-02-20 → 2027-03-16 (+24d) |
| 1 | **Ducts Works** | 2026-12-13 → 2027-01-03 (+21d) | 2026-12-29 → 2027-01-19 (+21d) |
| PRO-R25-TE-DL-100 | Material Delivery & Site Inspection for Ducts of Telecom Network | 2026-12-13 → 2027-01-03 (+21d) | 2026-12-29 → 2027-01-19 (+21d) |
| 3 | **Manholes Works** | 2027-01-05 → 2027-01-26 (+21d) | 2027-01-21 → 2027-02-11 (+21d) |
| PRO-R25-TE-DL-110 | Material Delivery & Site Inspection of Manholes for Telecom Network | 2027-01-05 → 2027-01-26 (+21d) | 2027-01-21 → 2027-02-11 (+21d) |
| 2 | **CCTV, Telephone, MSN, ACs System Works** | 2027-02-09 → 2027-03-02 (+21d) | 2027-02-20 → 2027-03-16 (+24d) |
| PRO-R25-CTV-DL-100 | Material Delivery & Site Inspection of for Civil and Finishes Works of CCTV Complete System | 2027-02-09 → 2027-03-02 (+21d) | 2027-02-20 → 2027-03-16 (+24d) |
| RD | **Road Works** | 2026-09-28 → 2026-10-19 (+21d) | 2027-04-04 → 2027-04-25 (+21d) |
| PO | **Issuance of Purchase Orders** | 2026-09-28 → 2026-10-19 (+21d) | 2026-11-15 → 2026-12-06 (+21d) |
| 1 | **Road Works** | 2026-09-28 → 2026-10-19 (+21d) | 2026-11-15 → 2026-12-06 (+21d) |
| PRO-RD-PO-100 | Issuance of Purchase Order for Subgrade of Road Works | 2026-09-28 → 2026-10-19 (+21d) | 2026-10-05 → 2026-10-26 (+21d) |
| PRO-RD-PO-110 | Issuance of Purchase Order for Aggregate Base Course of Road Works | 2026-10-06 → 2026-10-27 (+21d) | 2026-10-13 → 2026-11-03 (+21d) |
| PRO-RD-PO-120 | Issuance of Purchase Order for Prime Coat of Road Works | 2026-10-14 → 2026-11-04 (+21d) | 2026-10-21 → 2026-11-11 (+21d) |
| PRO-RD-PO-130 | Issuance of Purchase Order for Asphaltic Base Course Layer of Road Works | 2026-10-22 → 2026-11-12 (+21d) | 2026-10-29 → 2026-11-19 (+21d) |
| PRO-RD-PO-180 | Issuance of Purchase Order for Asphaltic Wearing Course Layer for Roads Network | 2026-10-31 → 2026-11-21 (+21d) | 2026-11-07 → 2026-11-28 (+21d) |
| PRO-RD-PO-190 | Issuance of Purchase Order for Tack Coat Layer for Roads Network | 2026-11-08 → 2026-11-29 (+21d) | 2026-11-15 → 2026-12-06 (+21d) |
| 2 | **Pavement Works** | 2026-10-14 → 2026-11-04 (+21d) | 2026-10-29 → 2026-11-19 (+21d) |
| PRO-RD-PO-140 | Issuance of Purchase Order for Interlock Tiles of Landscaping | 2026-10-14 → 2026-11-04 (+21d) | 2026-10-21 → 2026-11-11 (+21d) |
| PRO-RD-PO-150 | Issuance of Purchase Order for Curbstones of Landscaping | 2026-10-22 → 2026-11-12 (+21d) | 2026-10-29 → 2026-11-19 (+21d) |
| 3 | **Traffic Signs Boards and Roads Marking** | 2026-10-31 → 2026-11-21 (+21d) | 2026-11-15 → 2026-12-06 (+21d) |
| PRO-RD-PO-160 | Issuance of Purchase Order for Traffic Signs Boards of Road Works | 2026-10-31 → 2026-11-21 (+21d) | 2026-11-07 → 2026-11-28 (+21d) |
| PRO-RD-PO-170 | Issuance of Purchase Order for Road Markings of Road Works | 2026-11-08 → 2026-11-29 (+21d) | 2026-11-15 → 2026-12-06 (+21d) |
| MF | **Manufacturing of Material** | 2026-10-06 → 2026-10-27 (+21d) | 2027-02-16 → 2027-03-13 (+25d) |
| 1 | **Road Works** | 2026-10-06 → 2026-10-27 (+21d) | 2027-01-18 → 2027-02-08 (+21d) |
| PRO-RD-MF-100 | Manufacturing of Subgrade for Road Works | 2026-10-06 → 2026-10-27 (+21d) | 2026-10-17 → 2026-11-07 (+21d) |
| PRO-RD-MF-110 | Manufacturing of Aggregate Base Course for Road Works | 2026-10-18 → 2026-11-08 (+21d) | 2026-11-09 → 2026-11-30 (+21d) |
| PRO-RD-MF-120 | Manufacturing of Prime Coat for Road Works | 2026-11-10 → 2026-12-01 (+21d) | 2026-12-02 → 2026-12-23 (+21d) |
| PRO-RD-MF-190 | Manufacturing of Tack Coat Layer for Roads Network | 2026-11-16 → 2026-12-07 (+21d) | 2027-01-12 → 2027-02-02 (+21d) |
| PRO-RD-MF-130 | Manufacturing of Asphaltic Base Course Layer for Road Works | 2026-12-03 → 2026-12-24 (+21d) | 2026-12-26 → 2027-01-16 (+21d) |
| PRO-RD-MF-180 | Manufacturing of Asphaltic Wearing Course Layer for Roads Network | 2026-12-27 → 2027-01-17 (+21d) | 2027-01-18 → 2027-02-08 (+21d) |
| 2 | **Pavement Works** | 2027-01-13 → 2027-02-03 (+21d) | 2027-02-06 → 2027-02-27 (+21d) |
| PRO-RD-MF-140 | Manufacturing of Interlock Tiles for Landscaping | 2027-01-13 → 2027-02-03 (+21d) | 2027-02-06 → 2027-02-27 (+21d) |
| PRO-RD-MF-150 | Manufacturing of Curbstones for Landscaping | 2027-01-13 → 2027-02-03 (+21d) | 2027-02-04 → 2027-02-25 (+21d) |
| 3 | **Traffic Signs Boards and Roads Marking** | 2026-11-08 → 2026-11-29 (+21d) | 2027-02-16 → 2027-03-13 (+25d) |
| PRO-RD-MF-160 | Manufacturing of Traffic Signs Boards for Road Works | 2026-11-08 → 2026-11-29 (+21d) | 2027-02-08 → 2027-03-01 (+21d) |
| PRO-RD-MF-170 | Manufacturing of Road Markings for Road Works | 2026-11-16 → 2026-12-07 (+21d) | 2027-02-16 → 2027-03-13 (+25d) |
| 1DL | **1st Material Delivery & Site Inspection** | 2026-10-18 → 2026-11-08 (+21d) | 2027-03-14 → 2027-04-04 (+21d) |
| 1 | **Road Works** | 2026-10-18 → 2026-11-08 (+21d) | 2027-02-03 → 2027-02-24 (+21d) |
| PRO-RD-1DL-100 | 1ST Material Delivery for Subgrade of Road Works | 2026-10-18 → 2026-11-08 (+21d) | 2026-10-25 → 2026-11-15 (+21d) |
| PRO-RD-1DL-110 | 1ST Material Delivery for Aggregate Base Course of Road Works | 2026-11-10 → 2026-12-01 (+21d) | 2026-11-17 → 2026-12-08 (+21d) |
| PRO-RD-1DL-120 | 1ST Material Delivery for Prime Coat of Road Works | 2026-12-03 → 2026-12-24 (+21d) | 2026-12-20 → 2027-01-10 (+21d) |
| PRO-RD-1DL-130 | 1ST Material Delivery for Asphaltic Base Course Layer of Road Works | 2026-12-27 → 2027-01-17 (+21d) | 2027-01-03 → 2027-01-24 (+21d) |
| PRO-RD-1DL-180 | 1ST Material Delivery for Asphaltic Wearing Course Layer for Roads Network | 2027-01-19 → 2027-02-09 (+21d) | 2027-01-26 → 2027-02-16 (+21d) |
| PRO-RD-1DL-190 | 1ST Material Delivery for Tack Coat Layer for Roads Network | 2027-01-27 → 2027-02-17 (+21d) | 2027-02-03 → 2027-02-24 (+21d) |
| 2 | **Pavement Works** | 2027-02-07 → 2027-02-28 (+21d) | 2027-02-22 → 2027-03-18 (+24d) |
| PRO-RD-1DL-140 | 1ST Material Delivery for Interlock Tiles of Landscaping | 2027-02-07 → 2027-02-28 (+21d) | 2027-02-14 → 2027-03-07 (+21d) |
| PRO-RD-1DL-150 | 1ST Material Delivery for Curbstones of Landscaping | 2027-02-15 → 2027-03-08 (+21d) | 2027-02-22 → 2027-03-18 (+24d) |
| 3 | **Traffic Signs Boards and Roads Marking** | 2027-02-23 → 2027-03-20 (+25d) | 2027-03-14 → 2027-04-04 (+21d) |
| PRO-RD-1DL-170 | 1ST Material Delivery for Road Markings of Road Works | 2027-02-23 → 2027-03-20 (+25d) | 2027-03-02 → 2027-03-27 (+25d) |
| PRO-RD-1DL-160 | 1ST Material Delivery for Traffic Signs Boards of Road Works | 2027-03-03 → 2027-03-28 (+25d) | 2027-03-14 → 2027-04-04 (+21d) |
| DL | **Material Delivery & Site Inspection** | 2026-10-26 → 2026-11-16 (+21d) | 2027-04-04 → 2027-04-25 (+21d) |

| ID | Task | Start | Finish |
| --- | --- | --- | --- |
| 1 | **Pre-Bituminous Construction** | 2026-10-26 → 2026-11-16 (+21d) | 2026-12-13 → 2027-01-03 (+21d) |
| PRO-R25-RD-DL-100 | Material Delivery & Site Inspection for Subgrade of Road Works | 2026-10-26 → 2026-11-16 (+21d) | 2026-11-18 → 2026-12-09 (+21d) |
| PRO-R25-RD-DL-110 | Material Delivery & Site Inspection for Aggregate Base Course of Road Works | 2026-11-19 → 2026-12-10 (+21d) | 2026-12-13 → 2027-01-03 (+21d) |
| 4 | **Bituminous Construction** | 2026-12-21 → 2027-01-11 (+21d) | 2027-02-21 → 2027-03-17 (+24d) |
| PRO-R25-RD-DL-160 | Material Delivery & Site Inspection for Prime Coat Layer of Road Works | 2026-12-21 → 2027-01-11 (+21d) | 2027-01-02 → 2027-01-23 (+21d) |
| PRO-R25-RD-DL-170 | Material Delivery & Site Inspection for Asphaltic Base Course Layer of Road Works | 2027-01-04 → 2027-01-25 (+21d) | 2027-01-16 → 2027-02-06 (+21d) |
| PRO-RD-DL-200 | Material Delivery for Asphaltic Wearing Course Layer for Roads Network | 2027-01-27 → 2027-02-17 (+21d) | 2027-02-08 → 2027-03-01 (+21d) |
| PRO-RD-DL-210 | Material Delivery for Tack Coat Layer for Roads Network | 2027-02-09 → 2027-03-02 (+21d) | 2027-02-21 → 2027-03-17 (+24d) |
| 2 | **Pavement Works** | 2027-02-22 → 2027-03-18 (+24d) | 2027-03-22 → 2027-04-12 (+21d) |
| PRO-R25-RD-DL-120 | Material Delivery & Site Inspection of Interlock Tiles for Landscaping | 2027-02-22 → 2027-03-18 (+24d) | 2027-03-06 → 2027-03-30 (+24d) |
| PRO-R25-RD-DL-130 | Material Delivery & Site Inspection of Curbstones for Landscaping | 2027-03-07 → 2027-03-31 (+24d) | 2027-03-22 → 2027-04-12 (+21d) |
| 3 | **Traffic Signs Boards and Roads Marking** | 2027-03-07 → 2027-03-31 (+24d) | 2027-04-04 → 2027-04-25 (+21d) |
| PRO-R25-RD-DL-150 | Material Delivery & Site Inspection of Road Markings For Road Works | 2027-03-07 → 2027-03-31 (+24d) | 2027-03-22 → 2027-04-12 (+21d) |
| PRO-R25-RD-DL-140 | Material Delivery & Site Inspection of Traffic Signs Boards For Road Works | 2027-03-23 → 2027-04-13 (+21d) | 2027-04-04 → 2027-04-25 (+21d) |
| 1 | **Superstructure Works** | 2026-09-28 → 2026-10-19 (+21d) | 2026-11-28 → 2026-12-19 (+21d) |
| 1 | **Issuance of Purchase Orders** | 2026-09-28 → 2026-10-19 (+21d) | 2026-10-10 → 2026-10-31 (+21d) |
| SL1 | **Water Pump Station** | 2026-09-28 → 2026-10-19 (+21d) | 2026-10-01 → 2026-10-22 (+21d) |
| PRO-LS-CV-PO-20 | Issuance of Purchase Order for Works for Water Pump Station | 2026-09-28 → 2026-10-19 (+21d) | 2026-10-01 → 2026-10-22 (+21d) |
| SL11 | **Storage Tank (TSE)** | 2026-10-03 → 2026-10-24 (+21d) | 2026-10-10 → 2026-10-31 (+21d) |
| PRO-TSE-CV-PO-30 | Issuance of Purchase Order for Works for Storage Tank (TSE) | 2026-10-03 → 2026-10-24 (+21d) | 2026-10-10 → 2026-10-31 (+21d) |
| SL111 | **Control Room** | 2026-10-03 → 2026-10-24 (+21d) | 2026-10-10 → 2026-10-31 (+21d) |
| PRO-TSE-CV-PO-40 | Issuance of Purchase Order for Works for Control Room | 2026-10-03 → 2026-10-24 (+21d) | 2026-10-10 → 2026-10-31 (+21d) |
| SL | **Sewage Pump Stations** | 2026-10-03 → 2026-10-24 (+21d) | 2026-10-10 → 2026-10-31 (+21d) |
| PRO-SPS-CV-PO-10 | Issuance of Purchase Order for Works of Sewage Pump Station | 2026-10-03 → 2026-10-24 (+21d) | 2026-10-10 → 2026-10-31 (+21d) |
| SL12 | **Gaurd Room** | 2026-10-03 → 2026-10-24 (+21d) | 2026-10-10 → 2026-10-31 (+21d) |
| PRO-GR-CV-PO-40 | Issuance of Purchase Order for Materials for Gaurd Room | 2026-10-03 → 2026-10-24 (+21d) | 2026-10-10 → 2026-10-31 (+21d) |
| SL121 | **Boundary Fence** | 2026-10-03 → 2026-10-24 (+21d) | 2026-10-10 → 2026-10-31 (+21d) |
| PRO-FE-CV-PO-50 | Issuance of Purchase Order for Materials for Boundary Fence | 2026-10-03 → 2026-10-24 (+21d) | 2026-10-10 → 2026-10-31 (+21d) |
| 2 | **Manufacturing of Material** | 2026-10-03 → 2026-10-24 (+21d) | 2026-11-03 → 2026-11-24 (+21d) |
| SL1 | **Water Pump Station** | 2026-10-03 → 2026-10-24 (+21d) | 2026-10-10 → 2026-10-31 (+21d) |
| PRO-LS-CV-MF-30 | Manufacturing of Works for Works for Water Pump Station | 2026-10-03 → 2026-10-24 (+21d) | 2026-10-10 → 2026-10-31 (+21d) |
| SL11 | **Storage Tank (TSE)** | 2026-10-11 → 2026-11-01 (+21d) | 2026-10-26 → 2026-11-16 (+21d) |
| PRO-TSE-CV-MF-40 | Manufacturing of Works for Storage Tank (TSE) | 2026-10-11 → 2026-11-01 (+21d) | 2026-10-26 → 2026-11-16 (+21d) |
| SL111 | **Control Room** | 2026-10-11 → 2026-11-01 (+21d) | 2026-11-03 → 2026-11-24 (+21d) |
| PRO-TSE-CV-MF-50 | Manufacturing of Works for Control Room | 2026-10-11 → 2026-11-01 (+21d) | 2026-11-03 → 2026-11-24 (+21d) |
| SL | **Sewage Pump Stations** | 2026-10-11 → 2026-11-01 (+21d) | 2026-11-03 → 2026-11-24 (+21d) |
| PRO-SPS-CV-MF-10 | Manufacturing of Works of Sewage Pump Station | 2026-10-11 → 2026-11-01 (+21d) | 2026-11-03 → 2026-11-24 (+21d) |
| SL12 | **Gaurd Room** | 2026-10-11 → 2026-11-01 (+21d) | 2026-11-03 → 2026-11-24 (+21d) |
| PRO-GR-CV-MF-50 | Manufacturing of Materials for Gaurd Room | 2026-10-11 → 2026-11-01 (+21d) | 2026-11-03 → 2026-11-24 (+21d) |
| SL121 | **Boundary Fence** | 2026-10-11 → 2026-11-01 (+21d) | 2026-11-03 → 2026-11-24 (+21d) |
| PRO-FE-CV-MF-60 | Manufacturing of Materials for Boundary Fence | 2026-10-11 → 2026-11-01 (+21d) | 2026-11-03 → 2026-11-24 (+21d) |
| 3 | **1st Material Delivery & Site Inspection** | 2026-10-03 → 2026-10-24 (+21d) | 2026-11-11 → 2026-12-02 (+21d) |
| SL1 | **Water Pump Station** | 2026-10-03 → 2026-10-24 (+21d) | 2026-10-08 → 2026-10-29 (+21d) |
| PRO-LS-CV-1DL-40 | 1ST Material Delivery for Works of Water Pump Station | 2026-10-03 → 2026-10-24 (+21d) | 2026-10-08 → 2026-10-29 (+21d) |
| SL11 | **Storage Tank (TSE)** | 2026-10-27 → 2026-11-17 (+21d) | 2026-11-03 → 2026-11-24 (+21d) |
| PRO-TSE-CV-1DL-50 | 1ST Material Delivery for Works for Storage Tank (TSE) | 2026-10-27 → 2026-11-17 (+21d) | 2026-11-03 → 2026-11-24 (+21d) |
| SL111 | **Control Room** | 2026-11-04 → 2026-11-25 (+21d) | 2026-11-11 → 2026-12-02 (+21d) |
| PRO-TSE-CV-1DL-60 | 1ST Material Delivery for Works for Control Room | 2026-11-04 → 2026-11-25 (+21d) | 2026-11-11 → 2026-12-02 (+21d) |
| SL | **Sewage Pump Stations** | 2026-11-04 → 2026-11-25 (+21d) | 2026-11-11 → 2026-12-02 (+21d) |
| PRO-SPS-CV-1DL-10 | 1ST Material Delivery for Works of Sewage Pump Station | 2026-11-04 → 2026-11-25 (+21d) | 2026-11-11 → 2026-12-02 (+21d) |
| SL12 | **Gaurd Room** | 2026-11-04 → 2026-11-25 (+21d) | 2026-11-11 → 2026-12-02 (+21d) |
| PRO-GR-CV-1DL-60 | 1ST Material Delivery for Materials for Gaurd Room | 2026-11-04 → 2026-11-25 (+21d) | 2026-11-11 → 2026-12-02 (+21d) |
| SL121 | **Boundary Fence** | 2026-11-04 → 2026-11-25 (+21d) | 2026-11-11 → 2026-12-02 (+21d) |
| PRO-FE-CV-1DL-70 | 1ST Material Delivery for Materials for Boundary Fence | 2026-11-04 → 2026-11-25 (+21d) | 2026-11-11 → 2026-12-02 (+21d) |
| 4 | **Material Delivery & Site Inspection** | 2026-10-03 → 2026-10-24 (+21d) | 2026-11-28 → 2026-12-19 (+21d) |
| SL1 | **Water Pump Station** | 2026-10-03 → 2026-10-24 (+21d) | 2026-10-13 → 2026-11-03 (+21d) |
| PRO-LS-CV-DL-50 | Material Delivery & Site Inspection for Works for Water Pump Station | 2026-10-03 → 2026-10-24 (+21d) | 2026-10-13 → 2026-11-03 (+21d) |
| SL11 | **Storage Tank (TSE)** | 2026-10-14 → 2026-11-04 (+21d) | 2026-11-14 → 2026-12-05 (+21d) |
| PRO-TSE-CV-DL-60 | Material Delivery & Site Inspection for Works for Storage Tank (TSE) | 2026-10-14 → 2026-11-04 (+21d) | 2026-11-14 → 2026-12-05 (+21d) |
| SL111 | **Control Room** | 2026-11-12 → 2026-12-03 (+21d) | 2026-11-28 → 2026-12-19 (+21d) |
| PRO-TSE-CV-DL-70 | Material Delivery & Site Inspection for Works for Control Room | 2026-11-12 → 2026-12-03 (+21d) | 2026-11-28 → 2026-12-19 (+21d) |
| SL | **Sewage Pump Stations** | 2026-11-12 → 2026-12-03 (+21d) | 2026-11-28 → 2026-12-19 (+21d) |
| PRO-SPS-CV-DL-10 | Material Delivery & Site Inspection for Works for Pump Station | 2026-11-12 → 2026-12-03 (+21d) | 2026-11-28 → 2026-12-19 (+21d) |
| SL12 | **Gaurd Room** | 2026-11-12 → 2026-12-03 (+21d) | 2026-11-28 → 2026-12-19 (+21d) |
| PRO-GR-CV-DL-70 | Material Delivery & Site Inspection for Materials for Gaurd Room | 2026-11-12 → 2026-12-03 (+21d) | 2026-11-28 → 2026-12-19 (+21d) |
| SL121 | **Boundary Fence** | 2026-11-12 → 2026-12-03 (+21d) | 2026-11-28 → 2026-12-19 (+21d) |
| PRO-FE-CV-DL-80 | Material Delivery & Site Inspection for Materials for Boundary Fence | 2026-11-12 → 2026-12-03 (+21d) | 2026-11-28 → 2026-12-19 (+21d) |
| IR1 | **Softscape and Planting Works** | 2026-10-14 → 2026-11-04 (+21d) | 2027-01-28 → 2027-02-18 (+21d) |
| PO | **Issuance of Purchase Orders** | 2026-10-14 → 2026-11-04 (+21d) | 2026-10-27 → 2026-11-17 (+21d) |
| 1 | **Main Line Pipes** | 2026-10-14 → 2026-11-04 (+21d) | 2026-10-27 → 2026-11-17 (+21d) |

| ID | Task | Start | Finish |
| --- | --- | --- | --- |
| PRO-IR-PO-140 | Issuance of Purchase Order for Softscape and Planting Works | 2026-10-14 → 2026-11-04 (+21d) | 2026-10-20 → 2026-11-10 (+21d) |
| PRO-IR-PO-150 | Issuance of Purchase Order for Site Furnishings (Seating Bench,Stone Boulders and Gravel) | 2026-10-21 → 2026-11-11 (+21d) | 2026-10-27 → 2026-11-17 (+21d) |
| MF | **Manufacturing of Material** | 2026-10-21 → 2026-11-11 (+21d) | 2027-01-05 → 2027-01-26 (+21d) |
| 1 | **Main Line Pipes** | 2026-10-21 → 2026-11-11 (+21d) | 2027-01-05 → 2027-01-26 (+21d) |
| PRO-IR-MF-140 | Manufacturing of Softscape and Planting Works | 2026-10-21 → 2026-11-11 (+21d) | 2026-12-29 → 2027-01-19 (+21d) |
| PRO-IR-MF-150 | Manufacturing of Valves for Site Furnishings (Seating Bench,Stone Boulders and Gravel) | 2026-10-28 → 2026-11-18 (+21d) | 2027-01-05 → 2027-01-26 (+21d) |
| 1DL | **1st Material Delivery & Site Inspection** | 2026-12-30 → 2027-01-20 (+21d) | 2027-01-12 → 2027-02-02 (+21d) |
| 1 | **Main Line Pipes** | 2026-12-30 → 2027-01-20 (+21d) | 2027-01-12 → 2027-02-02 (+21d) |
| PRO-IR-1DL-140 | 1ST Material Delivery for Softscape and Planting Works | 2026-12-30 → 2027-01-20 (+21d) | 2027-01-05 → 2027-01-26 (+21d) |
| PRO-IR-1DL-150 | 1ST Material Delivery for Site Furnishings (Seating Bench,Stone Boulders and Gravel) | 2027-01-06 → 2027-01-27 (+21d) | 2027-01-12 → 2027-02-02 (+21d) |
| DL | **Material Delivery & Site Inspection** | 2027-01-06 → 2027-01-27 (+21d) | 2027-01-28 → 2027-02-18 (+21d) |
| 1 | **Main Line Pipes** | 2027-01-06 → 2027-01-27 (+21d) | 2027-01-28 → 2027-02-18 (+21d) |
| PRO-R25-IR-DL-140 | Material Delivery & Site Inspection of Softscape and Planting Works | 2027-01-06 → 2027-01-27 (+21d) | 2027-01-17 → 2027-02-07 (+21d) |
| PRO-R25-IR-DL-150 | Material Delivery & Site Inspection of Site Furnishings (Seating Bench,Stone Boulders and Gravel) | 2027-01-18 → 2027-02-08 (+21d) | 2027-01-28 → 2027-02-18 (+21d) |
| LL | **Long Lead Time Items** | 2026-10-14 → 2026-11-04 (+21d) | 2027-05-23 → 2027-06-13 (+21d) |
| 1 | **Superstructure Works** | 2026-10-14 → 2026-11-04 (+21d) | 2027-05-23 → 2027-06-13 (+21d) |
| SL | **Sewage Pump Station** | 2026-10-14 → 2026-11-04 (+21d) | 2027-04-08 → 2027-04-29 (+21d) |
| 1 | **Issuance of Purchase Orders** | 2026-10-14 → 2026-11-04 (+21d) | 2026-10-20 → 2026-11-10 (+21d) |
| PRO-SPS-LL-PO-10 | Issuance of Purchase Order for Electromechanical Works for Pump Station | 2026-10-14 → 2026-11-04 (+21d) | 2026-10-20 → 2026-11-10 (+21d) |
| 2 | **Manufacturing of Material** | 2026-10-21 → 2026-11-11 (+21d) | 2027-02-14 → 2027-03-07 (+21d) |
| PRO-SPS-LL-MF-10 | Manufacturing of Electromechanical Works for Pump Station | 2026-10-21 → 2026-11-11 (+21d) | 2027-02-14 → 2027-03-07 (+21d) |
| 3 | **Material Shipping/Custom Clearance/Delivery** | 2027-02-15 → 2027-03-08 (+21d) | 2027-03-14 → 2027-04-04 (+21d) |
| PRO-SPS-LL-SH/DL-10 | Material Delivery for Electromechanical Works for Pump Station | 2027-02-15 → 2027-03-08 (+21d) | 2027-03-14 → 2027-04-04 (+21d) |
| 4 | **Material Site Inspection** | 2027-03-15 → 2027-04-05 (+21d) | 2027-04-08 → 2027-04-29 (+21d) |
| PRO-SPS-LL-MSI-10 | Material Site Inspection for Electromechanical Works for Pump Station | 2027-03-15 → 2027-04-05 (+21d) | 2027-04-08 → 2027-04-29 (+21d) |
| SL1 | **Water Pump Station** | 2026-10-21 → 2026-11-11 (+21d) | 2027-03-08 → 2027-04-01 (+24d) |
| 1 | **Issuance of Purchase Orders** | 2026-10-21 → 2026-11-11 (+21d) | 2026-10-28 → 2026-11-18 (+21d) |
| PRO-LS-LL-PO-20 | Issuance of Purchase Order for Electromechanical Works for Water Pump Station | 2026-10-21 → 2026-11-11 (+21d) | 2026-10-28 → 2026-11-18 (+21d) |
| 2 | **Manufacturing of Material** | 2026-10-29 → 2026-11-19 (+21d) | 2027-01-18 → 2027-02-08 (+21d) |
| PRO-LS-LL-MF-20 | Manufacturing of Electromechanical Works for Water Pump Station | 2026-10-29 → 2026-11-19 (+21d) | 2027-01-18 → 2027-02-08 (+21d) |
| 3 | **Material Shipping/Custom Clearance/Delivery** | 2027-01-19 → 2027-02-09 (+21d) | 2027-02-11 → 2027-03-04 (+21d) |
| PRO-LS-LL-SH/DL-20 | Material Delivery for Electromechanical Works for Water Pump Station | 2027-01-19 → 2027-02-09 (+21d) | 2027-02-11 → 2027-03-04 (+21d) |
| 4 | **Material Site Inspection** | 2027-02-13 → 2027-03-06 (+21d) | 2027-03-08 → 2027-04-01 (+24d) |
| PRO-LS-LL-MSI-20 | Material Site Inspection for Electromechanical Works for Water Pump Station | 2027-02-13 → 2027-03-06 (+21d) | 2027-03-08 → 2027-04-01 (+24d) |
| SL2 | **Storage Tank (TSE)** | 2026-10-29 → 2026-11-19 (+21d) | 2027-05-23 → 2027-06-13 (+21d) |
| 1 | **Issuance of Purchase Orders** | 2026-10-29 → 2026-11-19 (+21d) | 2026-11-05 → 2026-11-26 (+21d) |
| PRO-TSE-LL-PO-30 | Issuance of Purchase Order for Electromechanical Works for Storage Tank (TSE) | 2026-10-29 → 2026-11-19 (+21d) | 2026-11-05 → 2026-11-26 (+21d) |
| 2 | **Manufacturing of Material** | 2026-11-07 → 2026-11-28 (+21d) | 2027-03-29 → 2027-04-19 (+21d) |
| PRO-TSE-LL-MF-30 | Manufacturing of Electromechanical Works for Storage Tank (TSE) | 2026-11-07 → 2026-11-28 (+21d) | 2027-03-29 → 2027-04-19 (+21d) |
| 3 | **Material Shipping/Custom Clearance/Delivery** | 2027-03-30 → 2027-04-20 (+21d) | 2027-04-22 → 2027-05-13 (+21d) |
| PRO-TSE-LL-SH/DL-30 | Material Delivery for Electromechanical Works for Storage Tank (TSE) | 2027-03-30 → 2027-04-20 (+21d) | 2027-04-22 → 2027-05-13 (+21d) |
| 4 | **Material Site Inspection** | 2027-04-24 → 2027-05-20 (+26d) | 2027-05-23 → 2027-06-13 (+21d) |
| PRO-TSE-LL-MSI-30 | Material Site Inspection for Electromechanical Works for Storage Tank (TSE) | 2027-04-24 → 2027-05-20 (+26d) | 2027-05-23 → 2027-06-13 (+21d) |
| CON | **Construction Works** |  | 2027-05-31 → 2027-06-16 (+16d) |
| INF | **Infrastructure Networks** |  | 2027-05-26 → 2027-06-14 (+19d) |
| IN | **Internal** |  | 2027-05-26 → 2027-06-14 (+19d) |
| 1 | **Alignment-RD-01** |  | 2027-04-29 → 2027-05-25 (+26d) |
| EW | **Earthworks** |  | 2026-12-16 → 2026-12-30 (+14d) |
| EW | **Earthworks** |  | 2026-12-16 → 2026-12-30 (+14d) |
| CO-EW-210_R01 | Excavation and Backfilling Works Upto Design Level for Earthworks for Alignment-RD-01(Remaining)-part1 |  | 2026-12-16 → 2026-12-30 (+14d) |
| SD | **Storm Drainage Network** | 2026-09-28 → 2026-10-19 (+21d) | 2026-12-08 → 2026-12-28 (+20d) |
| MH | **Manholes** | 2026-09-28 → 2026-10-19 (+21d) | 2026-11-14 → 2026-12-05 (+21d) |
| CO-SD-MH-230 | Trench Excavation and Bedding Works for Manholes of Storm Drainage Network for Alignment-RD-01 | 2026-09-28 → 2026-10-19 (+21d) | 2026-10-11 → 2026-11-01 (+21d) |
| CO-SD-MH-240 | Install RC Footing Works for Manholes of Storm Drainage Network for Alignment-RD-01 | 2026-10-15 → 2026-11-05 (+21d) | 2026-10-25 → 2026-11-15 (+21d) |
| CO-SD-MH-250 | Install RC Wall Rings & Slab Works for Manholes of Storm Drainage Network for Alignment-RD-01 | 2026-10-26 → 2026-11-16 (+21d) | 2026-11-02 → 2026-11-23 (+21d) |
| CO-SD-MH-260 | Backfilling Works for Manholes of Storm Drainage Network for Alignment-RD-01 | 2026-11-03 → 2026-11-24 (+21d) | 2026-11-14 → 2026-12-05 (+21d) |
| ML | **Main Line Sections** | 2026-10-26 → 2026-11-16 (+21d) | 2026-11-22 → 2026-12-12 (+20d) |
| CO-SD-ML-140 | Trench Excavation and Bedding Works for Main Lines of Storm Drainage Network for Alignment-RD-01 | 2026-10-26 → 2026-11-16 (+21d) | 2026-11-03 → 2026-11-24 (+21d) |
| CO-SD-ML-150 | Pipes Laying Works for Main Lines of Storm Drainage Network for Alignment-RD-01 | 2026-11-04 → 2026-11-24 (+20d) | 2026-11-12 → 2026-12-02 (+20d) |
| CO-SD-ML-160 | Trench Backfilling and Compaction Works for Main Lines of Storm Drainage Network for Alignment-RD-01 | 2026-11-14 → 2026-12-03 (+19d) | 2026-11-22 → 2026-12-12 (+20d) |
| CB | **Catch Basin Sections** | 2026-11-14 → 2026-12-03 (+19d) | 2026-12-08 → 2026-12-28 (+20d) |
| CO-SD-CB-180 | Trench Excavation and Bedding Works for Catch Basins of Storm Drainage Network for Alignment-RD-01 | 2026-11-14 → 2026-12-03 (+19d) | 2026-11-22 → 2026-12-12 (+20d) |
| CO-SD-CB-190 | Installation and Pipes Laying Connection Works for Catch Basins of Storm Drainage Network for Alignment-RD-01 | 2026-11-23 → 2026-12-13 (+20d) | 2026-11-30 → 2026-12-20 (+20d) |
| CO-SD-CB-200 | Trench Backfilling and Compaction Works for Catch Basins of Storm Drainage Network for Alignment-RD-01 | 2026-12-01 → 2026-12-21 (+20d) | 2026-12-08 → 2026-12-28 (+20d) |
| SW | **Sewage Network** | 2026-11-23 → 2026-12-13 (+20d) | 2027-01-31 → 2027-02-20 (+20d) |
| 1 | **Manholes** | 2026-11-23 → 2026-12-13 (+20d) | 2027-01-31 → 2027-02-20 (+20d) |
| CO-SW-MH-210 | Excavation Works for Main Line Manholes of Sewage Network for Alignment-RD-01 | 2026-11-23 → 2026-12-13 (+20d) | 2026-12-06 → 2026-12-26 (+20d) |
| CO-SW-MH-220 | Installation RC Footing Works for Main Line Manholes of Sewage Network for Alignment-RD-01 | 2026-12-07 → 2026-12-27 (+20d) | 2026-12-20 → 2027-01-09 (+20d) |
| CO-SW-MH-230 | Install Grp Liner Wall Works for Main Line Manholes of Sewage Network for Alignment-RD-01 | 2026-12-21 → 2027-01-10 (+20d) | 2027-01-03 → 2027-01-23 (+20d) |
| CO-SW-MH-240 | Pouring Grp Liner Wall Works for Main Line Manholes of Sewage Network for Alignment-RD-01 | 2027-01-04 → 2027-01-24 (+20d) | 2027-01-17 → 2027-02-06 (+20d) |

| ID | Task | Start | Finish |
| --- | --- | --- | --- |
| CO-SW-MH-250 | Backfilling Works for Main Line Manholes of Sewage Network for Alignment-RD-01 | 2027-01-18 → 2027-02-07 (+20d) | 2027-01-31 → 2027-02-20 (+20d) |
| ML | **Main Line Sections** | 2026-12-09 → 2026-12-29 (+20d) | 2027-01-31 → 2027-02-20 (+20d) |
| CO-SW-ML-140 | Trench Excavation and Bedding Works for Main Lines of Sewage Network for Alignment-RD-01 | 2026-12-09 → 2026-12-29 (+20d) | 2026-12-17 → 2027-01-06 (+20d) |
| CO-SW-ML-150 | Pipes Laying Works for Main Lines of Sewage Network for Alignment-RD-01 | 2026-12-19 → 2027-01-07 (+19d) | 2026-12-27 → 2027-01-16 (+20d) |
| CO-SW-ML-160 | Trench Backfilling and Compaction Works for Main Lines of Sewage Network for Alignment-RD-01 | 2027-01-25 → 2027-02-14 (+20d) | 2027-01-31 → 2027-02-20 (+20d) |
| TSE | **Treated Sewage Effluent (Tse)** | 2026-11-15 → 2026-12-06 (+21d) | 2027-01-02 → 2027-01-23 (+21d) |
| CO-TSE-ML-200 | Trench Excavation and Bedding Works for Main Lines of Treated Sewage Effluent (Tse) for Alignment-RD-01 | 2026-11-15 → 2026-12-06 (+21d) | 2026-11-22 → 2026-12-13 (+21d) |
| CO-TSE-ML-210 | Pipes Laying Works for Main Lines of Treated Sewage Effluent (Tse) for Alignment-RD-01 | 2026-11-28 → 2026-12-19 (+21d) | 2026-12-16 → 2027-01-06 (+21d) |
| CO-TSE-ML-230 | Trench Backfilling and Compaction Works for Treated Sewage Effluent (Tse) for Alignment-RD-01 | 2026-12-17 → 2027-01-07 (+21d) | 2027-01-02 → 2027-01-23 (+21d) |
| PW | **Potable Water Network** | 2026-11-15 → 2026-12-06 (+21d) | 2026-12-28 → 2027-01-11 (+14d) |
| ML | **Main Line Sections** | 2026-11-15 → 2026-12-06 (+21d) | 2026-12-21 → 2027-01-11 (+21d) |
| CO-PW-ML-140 | Trench Excavation and Bedding Works for Main Lines of Potable Water Network for Alignment-RD-01 | 2026-11-15 → 2026-12-06 (+21d) | 2026-11-21 → 2026-12-12 (+21d) |
| CO-PW-ML-150 | Pipes Laying and accessories for Main Lines of Potable Water Network for Alignment-RD-01 | 2026-12-08 → 2026-12-29 (+21d) | 2026-12-14 → 2027-01-04 (+21d) |
| CO-PW-ML-160 | Trench Backfilling and Compaction Works for Main Lines of Potable Water Network for Alignment-RD-01 | 2026-12-15 → 2027-01-05 (+21d) | 2026-12-21 → 2027-01-11 (+21d) |
| VC | **Valve Chamber** | 2026-11-17 → 2026-12-08 (+21d) | 2026-12-21 → 2027-01-11 (+21d) |
| CO-PW-VC-230 | Excavation Works for Main Line Valves and Valve Chambers of Potable Water Network for Alignment-RD-01 | 2026-11-17 → 2026-12-08 (+21d) | 2026-11-21 → 2026-12-12 (+21d) |
| CO-PW-VC190 | Installation of Valve Chambers of Potable Water Network for Alignment-RD-01 | 2026-11-22 → 2026-12-13 (+21d) | 2026-11-25 → 2026-12-16 (+21d) |
| CO-PW-VC-240 | Installation Works for Valves of Potable Water Network for Alignment-RD-01 | 2026-11-26 → 2026-12-17 (+21d) | 2026-11-30 → 2026-12-21 (+21d) |
| CO-PW-VC-250 | Backfilling Works for Main Line Valves and Valve Chambers of Potable Water Network for Alignment-RD-01 | 2026-12-17 → 2027-01-07 (+21d) | 2026-12-21 → 2027-01-11 (+21d) |
| FH | **Fire Hydrant** | 2026-11-22 → 2026-12-13 (+21d) | 2026-12-28 → 2027-01-11 (+14d) |
| CO-PW-FH-170 | Excavation Works for Fire Hydrants of Potable Water Network for Alignment-RD-01 | 2026-11-22 → 2026-12-13 (+21d) | 2026-12-08 → 2026-12-29 (+21d) |
| CO-PW-FH-180 | Installation Works for Fire Hydrant of Potable Water Network for Alignment-RD-01 | 2026-12-22 → 2027-01-05 (+14d) | 2026-12-24 → 2027-01-07 (+14d) |
| CO-PW-FH-190 | Trench Backfilling and Compaction Works for Fire Hydrants of Potable Water Network for Alignment-RD-01 | 2026-12-26 → 2027-01-09 (+14d) | 2026-12-28 → 2027-01-11 (+14d) |
| IR | **Irrigation Network** | 2027-01-03 → 2027-01-24 (+21d) | 2027-02-13 → 2027-03-06 (+21d) |
| ML | **Main Line Pipes** | 2027-01-03 → 2027-01-24 (+21d) | 2027-02-13 → 2027-03-06 (+21d) |
| CO-IR-ML-150 | Trench Excavation and Bedding Works for Main Lines of Irrigation Network for Alignment-RD-01 | 2027-01-03 → 2027-01-24 (+21d) | 2027-01-10 → 2027-01-31 (+21d) |
| CO-IR-ML-160 | Pipes Laying Works for Main Lines of Irrigation Network for Alignment-RD-01 | 2027-01-11 → 2027-02-01 (+21d) | 2027-01-19 → 2027-02-09 (+21d) |
| CO-IR-ML-170 | Installation Works for Main Line Valves of Irrigation Network for Alignment-RD-01 | 2027-01-20 → 2027-02-10 (+21d) | 2027-01-27 → 2027-02-17 (+21d) |
| CO-IR-ML-190 | Installation Works for Bulbblers And Sprinklers and Irrigation Control System of Irrigation Network for Alignment-RD-01 | 2027-01-28 → 2027-02-18 (+21d) | 2027-02-08 → 2027-03-01 (+21d) |
| CO-IR-ML-180 | Trench Backfilling and Compaction Works for Main Lines of Irrigation Network for Alignment-RD-01 | 2027-02-09 → 2027-03-02 (+21d) | 2027-02-13 → 2027-03-06 (+21d) |
| MV | **Medium Voltage Network** | 2027-02-01 → 2027-02-21 (+20d) | 2027-02-21 → 2027-03-16 (+23d) |
| CW | **Cabling Works** | 2027-02-01 → 2027-02-21 (+20d) | 2027-02-21 → 2027-03-16 (+23d) |
| CO-MV-ML-280 | Trench Excavation and Bedding Works for Medium Voltage Network for Alignment-RD-01 | 2027-02-01 → 2027-02-21 (+20d) | 2027-02-07 → 2027-02-27 (+20d) |
| CO-MV-ML-290 | Duct Laying Works for Medium Voltage Network for Alignment-RD-01 | 2027-02-08 → 2027-02-28 (+20d) | 2027-02-14 → 2027-03-06 (+20d) |
| CO-MV-ML-300 | Trench Backfilling and Compaction Works for Medium Voltage Network for Alignment-RD-01 | 2027-02-15 → 2027-03-07 (+20d) | 2027-02-21 → 2027-03-16 (+23d) |
| LV | **Low Voltage Network** | 2027-02-22 → 2027-03-17 (+23d) | 2027-03-25 → 2027-04-14 (+20d) |
| MLVC | **Main Low Voltage Cables Works ( Cable 300 MM )** | 2027-02-22 → 2027-03-17 (+23d) | 2027-03-17 → 2027-04-06 (+20d) |
| CON-LV-ML-130 | Trench Excavation and Bedding Works for Main Cable of Low Voltage Network for Alignment-RD-01 | 2027-02-22 → 2027-03-17 (+23d) | 2027-02-28 → 2027-03-23 (+23d) |
| CON-LV-ML-140 | Cable Laying Works for Main Cable of Low Voltage Network for Alignment-RD-01 | 2027-03-01 → 2027-03-24 (+23d) | 2027-03-07 → 2027-03-30 (+23d) |
| CON-LV-ML-150 | Trench Backfilling and Compaction Works for Main Cable of Low Voltage Network for Alignment-RD-01 | 2027-03-08 → 2027-03-31 (+23d) | 2027-03-17 → 2027-04-06 (+20d) |
| SLVC | **Service Low Voltage Cables Works ( Cable 70 MM )** | 2027-03-01 → 2027-03-24 (+23d) | 2027-03-25 → 2027-04-14 (+20d) |
| CON-LV-HC-130 | Trench Excavation and Bedding Works for Service Cable of Low Voltage Network for Alignment-RD-01 | 2027-03-01 → 2027-03-24 (+23d) | 2027-03-07 → 2027-03-30 (+23d) |
| CON-LV-HC-140 | Cable Laying Works for Service Cable of Low Voltage Network for Alignment-RD-01 | 2027-03-08 → 2027-03-31 (+23d) | 2027-03-18 → 2027-04-07 (+20d) |
| CON-LV-HC-150 | Trench Backfilling and Compaction Works for Service Cable of Low Voltage Network for Alignment-RD-01 | 2027-03-20 → 2027-04-08 (+19d) | 2027-03-25 → 2027-04-14 (+20d) |
| DP | **Distribution Pillars Works** | 2027-03-01 → 2027-03-24 (+23d) | 2027-03-08 → 2027-03-31 (+23d) |
| CON-LV-DP-130 | Foundation Excavation Works for Distribution Pillars of Low Voltage Network for Alignment-RD-01 | 2027-03-01 → 2027-03-24 (+23d) | 2027-03-08 → 2027-03-31 (+23d) |
| SL | **Street Lighting Network** | 2027-02-08 → 2027-02-28 (+20d) | 2027-03-06 → 2027-03-29 (+23d) |
| LP | **Lighting Poles Works** | 2027-02-08 → 2027-02-28 (+20d) | 2027-03-01 → 2027-03-24 (+23d) |
| CO-SL-LP-350 | Installation Works for Lighting Poles Foundation of Street Lighting Network for Alignment-RD-01 | 2027-02-08 → 2027-02-28 (+20d) | 2027-02-16 → 2027-03-08 (+20d) |
| CO-SL-LP-360 | Installation Works for Lighting Poles of Street Lighting Network for Alignment-RD-01 | 2027-02-17 → 2027-03-13 (+24d) | 2027-02-22 → 2027-03-17 (+23d) |
| CO-SL-LP-380 | Backfilling Works for Lighting Poles of Street Lighting Network for Alignment-RD-01 | 2027-02-23 → 2027-03-18 (+23d) | 2027-03-01 → 2027-03-24 (+23d) |
| CW | **Cabling Works** | 2027-02-23 → 2027-03-18 (+23d) | 2027-03-06 → 2027-03-29 (+23d) |
| CO-SL-CL-290 | Cable Laying Works for Street Lighting Network for Alignment-RD-01 | 2027-02-23 → 2027-03-18 (+23d) | 2027-02-28 → 2027-03-23 (+23d) |
| CO-SL-CL-300 | Trench Backfilling and Compaction Works for Street Lighting Network for Alignment-RD-01 | 2027-03-01 → 2027-03-24 (+23d) | 2027-03-06 → 2027-03-29 (+23d) |
| TE | **Telecom and Light Current Network** | 2027-03-07 → 2027-03-30 (+23d) | 2027-04-03 → 2027-04-22 (+19d) |
| PD | **Ducts Works** | 2027-03-27 → 2027-04-15 (+19d) | 2027-04-03 → 2027-04-22 (+19d) |
| CO-TE-DW-150 | Pipes Laying Works for Ducts of Telecom Network for Alignment-RD-01 | 2027-03-27 → 2027-04-15 (+19d) | 2027-03-30 → 2027-04-19 (+20d) |
| CO-TE-DW-160 | Trench Backfilling and Compaction Works for Ducts of Telecom Network for Alignment-RD-01 | 2027-03-31 → 2027-04-20 (+20d) | 2027-04-03 → 2027-04-22 (+19d) |
| MH | **Manholes Works** | 2027-03-07 → 2027-03-30 (+23d) | 2027-03-18 → 2027-04-07 (+20d) |
| CO-TE-MH-170 | Excavation Works for Manholes of Telecom Network for Alignment-RD-01 | 2027-03-07 → 2027-03-30 (+23d) | 2027-03-14 → 2027-04-03 (+20d) |
| CO-TE-MH-180 | Installation Works for Manholes of Telecom Network for Alignment-RD-01 | 2027-03-07 → 2027-03-30 (+23d) | 2027-03-14 → 2027-04-03 (+20d) |
| CO-TE-MH-190 | Backfilling Works for Manholes of Telecom Network for Alignment-RD-01 | 2027-03-15 → 2027-04-04 (+20d) | 2027-03-18 → 2027-04-07 (+20d) |
| DD | **CCTV, Telephone, MSN, ACs System Works** | 2027-03-20 → 2027-04-08 (+19d) | 2027-03-28 → 2027-04-17 (+20d) |
| CO-TE-CTV-150 | Installation of CCTV, Telephone, ACS and MSN Systems Cables for Alignment-RD-01 | 2027-03-20 → 2027-04-08 (+19d) | 2027-03-28 → 2027-04-17 (+20d) |
| RD | **Road Network** | 2027-04-04 → 2027-04-24 (+20d) | 2027-04-14 → 2027-05-04 (+20d) |
| LS | **Pavement Works** | 2027-04-04 → 2027-04-24 (+20d) | 2027-04-14 → 2027-05-04 (+20d) |
| CO-RD-PV-180 | Fixing of Curbstone for Sidewalks Pavement for Alignment-RD-01 | 2027-04-04 → 2027-04-24 (+20d) | 2027-04-14 → 2027-05-04 (+20d) |
| CO-RD-PV-190 | Fixing of Interlock Tiles for Sidewalks Pavement for Alignment-RD-01 | 2027-04-04 → 2027-04-24 (+20d) | 2027-04-14 → 2027-05-04 (+20d) |
| TS | **Traffic Signs Boards and Roads Marking** | 2027-04-04 → 2027-04-24 (+20d) | 2027-04-12 → 2027-05-02 (+20d) |
| CO-RD-F-RM-190 | Application of Road Marking Works For Road Works for Alignment-RD-01 | 2027-04-04 → 2027-04-24 (+20d) | 2027-04-07 → 2027-04-27 (+20d) |

| ID | Task | Start | Finish |
| --- | --- | --- | --- |
| CO-RD-F-TS-130 | Installation Works of Traffic Signs Boards For Road Works for Alignment-RD-01 | 2027-04-08 → 2027-04-28 (+20d) | 2027-04-12 → 2027-05-02 (+20d) |
| 3 | **Finishes for Infrastructure Networks** | 2027-02-22 → 2027-03-17 (+23d) | 2027-04-29 → 2027-05-25 (+26d) |
| 11 | **Storm Drainage Network** | 2027-04-04 → 2027-04-24 (+20d) | 2027-04-29 → 2027-05-25 (+26d) |
| TF | **Testing and Finishes** | 2027-04-04 → 2027-04-24 (+20d) | 2027-04-29 → 2027-05-25 (+26d) |
| CO-SD-CB-TF-190 | Catch Basin Internal Finishes (Benching ) for Storm Drainage Network for Alignment-RD-01 | 2027-04-04 → 2027-04-24 (+20d) | 2027-04-10 → 2027-04-29 (+19d) |
| CO-SD-ML-TF-110 | Testing Work for Pipes of Storm Drainage Network for Alignment-RD-01 | 2027-04-11 → 2027-05-01 (+20d) | 2027-04-12 → 2027-05-02 (+20d) |
| CO-SD-MH-TF-230 | Testing Works for Manholes of Storm Drainage Network for Alignment-RD-01 | 2027-04-13 → 2027-05-03 (+20d) | 2027-04-14 → 2027-05-04 (+20d) |
| CO-SD-CB-TF-170 | Testing Works for Catch Basins of Storm Drainage Network for Alignment-RD-01 | 2027-04-15 → 2027-05-05 (+20d) | 2027-04-22 → 2027-05-12 (+20d) |
| CO-SD-CB-TF-180 | Install Catch Basin Cover Works for External Finishes of Storm Drainage Network for Alignment-RD-01 | 2027-04-24 → 2027-05-13 (+19d) | 2027-04-29 → 2027-05-25 (+26d) |
| 10 | **Sewage Network** | 2027-04-04 → 2027-04-24 (+20d) | 2027-04-11 → 2027-05-01 (+20d) |
| TF | **Testing and Finishes** | 2027-04-04 → 2027-04-24 (+20d) | 2027-04-11 → 2027-05-01 (+20d) |
| CO-SW-TF-250 | Testing Works for Main Line Manholes of Sewage Network for Alignment-RD-01 | 2027-04-04 → 2027-04-24 (+20d) | 2027-04-06 → 2027-04-26 (+20d) |
| CO-SW-TF-230 | Final Testing For Main Line of Sewage Network for Alignment-RD-01 | 2027-04-07 → 2027-04-27 (+20d) | 2027-04-11 → 2027-05-01 (+20d) |
| 9 | **Potable Water Network** | 2027-04-04 → 2027-04-24 (+20d) | 2027-04-12 → 2027-05-02 (+20d) |
| TF | **Testing and Finishes** | 2027-04-04 → 2027-04-24 (+20d) | 2027-04-12 → 2027-05-02 (+20d) |
| CO-PW-TF-140 | Fire Hydrant Finishies (S.Box + Safety + Marker Post ) of Potable Water Network for Alignment-RD-01 | 2027-04-04 → 2027-04-24 (+20d) | 2027-04-07 → 2027-04-27 (+20d) |
| CO-PW-TF-150 | Final Finishes works and Covers for Valves and Valve Chambers for Alignment-RD-01 | 2027-04-08 → 2027-04-28 (+20d) | 2027-04-10 → 2027-04-29 (+19d) |
| CO-PW-TF-220 | Testing of Potable Water Network for Alignment-RD-01 | 2027-04-11 → 2027-05-01 (+20d) | 2027-04-12 → 2027-05-02 (+20d) |
| 13 | **Irrigation Network** | 2027-04-13 → 2027-05-03 (+20d) | 2027-04-14 → 2027-05-04 (+20d) |
| TF | **Testing and Finishes** | 2027-04-13 → 2027-05-03 (+20d) | 2027-04-14 → 2027-05-04 (+20d) |
| CO-IR-TF-170 | Final Testing (pressure tests) of Irrigation Network for Alignment-RD-01 | 2027-04-13 → 2027-05-03 (+20d) | 2027-04-14 → 2027-05-04 (+20d) |
| 1 | **Treated Sewage Effluent (Tse)** | 2027-04-13 → 2027-05-03 (+20d) | 2027-04-14 → 2027-05-04 (+20d) |
| TF | **Testing and Finishes** | 2027-04-13 → 2027-05-03 (+20d) | 2027-04-14 → 2027-05-04 (+20d) |
| CO-TSE-TF-210 | Final Testing (pressure tests) of Treated Sewage Effluent (Tse) for Alignment-RD-01 | 2027-04-13 → 2027-05-03 (+20d) | 2027-04-14 → 2027-05-04 (+20d) |
| 14 | **Medium Voltage Network** | 2027-02-22 → 2027-03-17 (+23d) | 2027-02-23 → 2027-03-18 (+23d) |
| TT | **Termination and Testing Works** | 2027-02-22 → 2027-03-17 (+23d) | 2027-02-23 → 2027-03-18 (+23d) |
| CO-MV-TF-230 | Testing and Termination Works of Medium Voltage Network for Alignment-RD-01 | 2027-02-22 → 2027-03-17 (+23d) | 2027-02-23 → 2027-03-18 (+23d) |
| 6 | **Low Voltage Network** | 2027-03-27 → 2027-04-15 (+19d) | 2027-03-30 → 2027-04-19 (+20d) |
| TT | **Termination and Testing Works** | 2027-03-27 → 2027-04-15 (+19d) | 2027-03-30 → 2027-04-19 (+20d) |
| CON-LV-TT-120 | Testing and Termination Works for Substation Low Voltage Panel Boards of Low Voltage Network for Alignment-RD-01 | 2027-03-27 → 2027-04-15 (+19d) | 2027-03-30 → 2027-04-19 (+20d) |
| 12 | **Street Lighting Network** | 2027-03-07 → 2027-03-30 (+23d) | 2027-04-04 → 2027-04-25 (+21d) |
| TR | **Termination and Testing Works** | 2027-03-07 → 2027-03-30 (+23d) | 2027-04-04 → 2027-04-25 (+21d) |
| CO-SL-LP-370 | Installation Works for Lighting Fixtures With Drop Wire of Street Lighting Network for Alignment-RD-01 | 2027-03-07 → 2027-03-30 (+23d) | 2027-03-16 → 2027-04-05 (+20d) |
| CO-SL-TF-410 | Testing Works for Lighting Poles of Street Lighting Network for Alignment-RD-01 | 2027-04-01 → 2027-04-22 (+21d) | 2027-04-04 → 2027-04-25 (+21d) |
| ES | **Earthing System Works** | 2027-03-27 → 2027-04-17 (+21d) | 2027-03-31 → 2027-04-21 (+21d) |
| CO-SL-ES-240 | Install Earthing System Works for Lighting Poles of Street Lighting Network for Alignment-RD-01 | 2027-03-27 → 2027-04-17 (+21d) | 2027-03-29 → 2027-04-19 (+21d) |
| CO-SL-ES-250 | Install Earthing System Works for Lighting Panel Boards of Street Lighting Network for Alignment-RD-01 | 2027-03-30 → 2027-04-20 (+21d) | 2027-03-31 → 2027-04-21 (+21d) |
| 3 | **Telecom and Light Current Network** | 2027-04-04 → 2027-04-24 (+20d) | 2027-04-10 → 2027-04-29 (+19d) |
| 1 | **Testing and Finishes** | 2027-04-04 → 2027-04-24 (+20d) | 2027-04-10 → 2027-04-29 (+19d) |
| CO-TE-CTV-TF-180 | Testing and Interface modules with Telecom for Alignment-RD-01 | 2027-04-04 → 2027-04-24 (+20d) | 2027-04-06 → 2027-04-26 (+20d) |
| CO-TE-CTV-TF-310 | Testing and Interface modules with CCTV, Telephone, MSN and Access Control for Alignment-RD-01 | 2027-04-07 → 2027-04-27 (+20d) | 2027-04-10 → 2027-04-29 (+19d) |
| 5 | **Alignment-RD-02** | 2026-10-25 → 2026-11-15 (+21d) | 2027-05-26 → 2027-06-14 (+19d) |
| EW | **Earthworks** | 2026-10-25 → 2026-11-15 (+21d) | 2026-11-07 → 2026-11-28 (+21d) |
| EW | **Earthworks** | 2026-10-25 → 2026-11-15 (+21d) | 2026-11-07 → 2026-11-28 (+21d) |
| CO-EW-220 | Excavation and Backfilling Works Upto Design Level for Earthworks for Alignment-RD-02 | 2026-10-25 → 2026-11-15 (+21d) | 2026-11-07 → 2026-11-28 (+21d) |
| SD | **Storm Drainage Network** | 2026-11-08 → 2026-11-29 (+21d) | 2027-02-25 → 2027-03-20 (+23d) |
| MH | **Manholes** | 2026-11-08 → 2026-11-29 (+21d) | 2026-11-22 → 2026-12-13 (+21d) |
| CO-SD-MH-270 | Trench Excavation and Bedding Works for Manholes of Storm Drainage Network for Alignment-RD-02 | 2026-11-08 → 2026-11-29 (+21d) | 2026-11-11 → 2026-12-02 (+21d) |
| CO-SD-MH-280 | Install RC Footing Works for Manholes of Storm Drainage Network for Alignment-RD-02 | 2026-11-12 → 2026-12-03 (+21d) | 2026-11-15 → 2026-12-06 (+21d) |
| CO-SD-MH-290 | Install RC Wall Rings & Slab Works for Manholes of Storm Drainage Network for Alignment-RD-02 | 2026-11-16 → 2026-12-07 (+21d) | 2026-11-18 → 2026-12-09 (+21d) |
| CO-SD-MH-300 | Backfilling Works for Manholes of Storm Drainage Network for Alignment-RD-02 | 2026-11-19 → 2026-12-10 (+21d) | 2026-11-22 → 2026-12-13 (+21d) |
| ML | **Main Line Sections** | 2026-11-19 → 2026-12-10 (+21d) | 2026-12-02 → 2026-12-20 (+18d) |
| CO-SD-ML-170 | Trench Excavation and Bedding Works for Main Lines of Storm Drainage Network for Alignment-RD-02 | 2026-11-19 → 2026-12-10 (+21d) | 2026-11-22 → 2026-12-13 (+21d) |
| CO-SD-ML-180 | Pipes Laying Works for Main Lines of Storm Drainage Network for Alignment-RD-02 | 2026-11-25 → 2026-12-14 (+19d) | 2026-11-28 → 2026-12-16 (+18d) |
| CO-SD-ML-190 | Trench Backfilling and Compaction Works for Main Lines of Storm Drainage Network for Alignment-RD-02 | 2026-11-30 → 2026-12-17 (+17d) | 2026-12-02 → 2026-12-20 (+18d) |
| CB | **Catch Basin Sections** | 2026-12-03 → 2026-12-21 (+18d) | 2027-02-25 → 2027-03-20 (+23d) |
| CO-SD-CB-210 | Trench Excavation and Bedding Works for Catch Basins of Storm Drainage Network for Alignment-RD-02 | 2026-12-03 → 2026-12-21 (+18d) | 2026-12-23 → 2027-01-10 (+18d) |
| CO-SD-CB-220 | Installation and Pipes Laying Connection Works for Catch Basins of Storm Drainage Network for Alignment-RD-02 | 2026-12-24 → 2027-01-11 (+18d) | 2027-01-14 → 2027-02-01 (+18d) |
| CO-SD-CB-230 | Trench Backfilling and Compaction Works for Catch Basins of Storm Drainage Network for Alignment-RD-02 | 2027-02-21 → 2027-03-15 (+22d) | 2027-02-25 → 2027-03-20 (+23d) |
| SW | **Sewage Network** | 2026-12-03 → 2026-12-21 (+18d) | 2027-02-08 → 2027-02-25 (+17d) |
| 1 | **Manholes** | 2026-12-03 → 2026-12-21 (+18d) | 2027-02-08 → 2027-02-25 (+17d) |
| CO-SW-MH-260 | Excavation Works for Main Line Manholes of Sewage Network for Alignment-RD-02 | 2026-12-03 → 2026-12-21 (+18d) | 2026-12-15 → 2027-01-02 (+18d) |
| CO-SW-MH-270 | Installation RC Footing Works for Main Line Manholes of Sewage Network for Alignment-RD-02 | 2026-12-16 → 2027-01-03 (+18d) | 2026-12-28 → 2027-01-14 (+17d) |
| CO-SW-MH-280 | Install Grp Liner Wall Works for Main Line Manholes of Sewage Network for Alignment-RD-02 | 2026-12-29 → 2027-01-16 (+18d) | 2027-01-11 → 2027-01-28 (+17d) |
| CO-SW-MH-290 | Pouring Grp Liner Wall Works for Main Line Manholes of Sewage Network for Alignment-RD-02 | 2027-01-12 → 2027-01-30 (+18d) | 2027-01-25 → 2027-02-11 (+17d) |
| CO-SW-MH-300 | Backfilling Works for Main Line Manholes of Sewage Network for Alignment-RD-02 | 2027-01-26 → 2027-02-13 (+18d) | 2027-02-08 → 2027-02-25 (+17d) |
| ML | **Main Line Sections** | 2026-12-03 → 2026-12-21 (+18d) | 2027-02-08 → 2027-02-25 (+17d) |
| CO-SW-ML-170 | Trench Excavation and Bedding Works for Main Lines of Sewage Network for Alignment-RD-02 | 2026-12-03 → 2026-12-21 (+18d) | 2026-12-15 → 2027-01-02 (+18d) |
| CO-SW-ML-180 | Pipes Laying Works for Main Lines of Sewage Network for Alignment-RD-02 | 2026-12-16 → 2027-01-03 (+18d) | 2026-12-28 → 2027-01-14 (+17d) |
| CO-SW-ML-190 | Trench Backfilling and Compaction Works for Main Lines of Sewage Network for Alignment-RD-02 | 2027-01-27 → 2027-02-14 (+18d) | 2027-02-08 → 2027-02-25 (+17d) |

| ID | Task | Start | Finish |
| --- | --- | --- | --- |
| TSE | **Treated Sewage Effluent (Tse)** | 2026-12-03 → 2026-12-21 (+18d) | 2027-01-19 → 2027-02-06 (+18d) |
| CO-TSE-ML-250 | Trench Excavation and Bedding Works for Main Lines of Treated Sewage Effluent (Tse) for Alignment-RD-02 | 2026-12-03 → 2026-12-21 (+18d) | 2026-12-16 → 2027-01-03 (+18d) |
| CO-TSE-ML-260 | Pipes Laying Works for Main Lines of Treated Sewage Effluent (Tse) for Alignment-RD-02 | 2026-12-17 → 2027-01-04 (+18d) | 2027-01-05 → 2027-01-23 (+18d) |
| CO-TSE-ML-280 | Trench Backfilling and Compaction Works for Treated Sewage Effluent (Tse) for Alignment-RD-02 | 2027-01-06 → 2027-01-24 (+18d) | 2027-01-19 → 2027-02-06 (+18d) |
| PW | **Potable Water Network** | 2027-01-20 → 2027-02-07 (+18d) | 2027-02-09 → 2027-02-27 (+18d) |
| ML | **Main Line Sections** | 2027-01-20 → 2027-02-07 (+18d) | 2027-02-08 → 2027-02-25 (+17d) |
| CO-PW-ML-170 | Trench Excavation and Bedding Works for Main Lines of Potable Water Network for Alignment-RD-02 | 2027-01-20 → 2027-02-07 (+18d) | 2027-01-25 → 2027-02-11 (+17d) |
| CO-PW-ML-180 | Pipes Laying and accessories for Main Lines of Potable Water Network for Alignment-RD-02 | 2027-01-26 → 2027-02-13 (+18d) | 2027-02-02 → 2027-02-20 (+18d) |
| CO-PW-ML-190 | Trench Backfilling and Compaction Works for Main Lines of Potable Water Network for Alignment-RD-02 | 2027-02-03 → 2027-02-21 (+18d) | 2027-02-08 → 2027-02-25 (+17d) |
| VC | **Valve Chamber** | 2027-01-20 → 2027-02-07 (+18d) | 2027-02-09 → 2027-02-27 (+18d) |
| CO-PW-VC-260 | Excavation Works for Main Line Valves and Valve Chambers of Potable Water Network for Alignment-RD-02 | 2027-01-20 → 2027-02-07 (+18d) | 2027-01-25 → 2027-02-11 (+17d) |
| CO-PW-VC200 | Installation of Valve Chambers of Potable Water Network for Alignment-RD-02 | 2027-01-26 → 2027-02-13 (+18d) | 2027-01-28 → 2027-02-15 (+18d) |
| CO-PW-VC-270 | Installation Works for Valves of Potable Water Network for Alignment-RD-02 | 2027-01-30 → 2027-02-16 (+17d) | 2027-02-03 → 2027-02-21 (+18d) |
| CO-PW-VC-280 | Backfilling Works for Main Line Valves and Valve Chambers of Potable Water Network for Alignment-RD-02 | 2027-02-04 → 2027-02-22 (+18d) | 2027-02-09 → 2027-02-27 (+18d) |
| FH | **Fire Hydrant** | 2027-01-26 → 2027-02-13 (+18d) | 2027-02-09 → 2027-02-27 (+18d) |
| CO-PW-FH-200 | Excavation Works for Fire Hydrants of Potable Water Network for Alignment-RD-02 | 2027-01-26 → 2027-02-13 (+18d) | 2027-01-28 → 2027-02-15 (+18d) |
| CO-PW-FH-210 | Installation Works for Fire Hydrant of Potable Water Network for Alignment-RD-02 | 2027-02-03 → 2027-02-21 (+18d) | 2027-02-06 → 2027-02-23 (+17d) |
| CO-PW-FH-220 | Trench Backfilling and Compaction Works for Fire Hydrants of Potable Water Network for Alignment-RD-02 | 2027-02-07 → 2027-02-24 (+17d) | 2027-02-09 → 2027-02-27 (+18d) |
| IR | **Irrigation Network** | 2027-01-31 → 2027-02-14 (+14d) | 2027-02-16 → 2027-03-06 (+18d) |
| ML | **Main Line Pipes** | 2027-01-31 → 2027-02-14 (+14d) | 2027-02-16 → 2027-03-06 (+18d) |
| CO-IR-ML-200 | Trench Excavation and Bedding Works for Main Lines of Irrigation Network for Alignment-RD-02 | 2027-01-31 → 2027-02-14 (+14d) | 2027-02-02 → 2027-02-16 (+14d) |
| CO-IR-ML-210 | Pipes Laying Works for Main Lines of Irrigation Network for Alignment-RD-02 | 2027-02-03 → 2027-02-21 (+18d) | 2027-02-06 → 2027-02-23 (+17d) |
| CO-IR-ML-220 | Installation Works for Main Line Valves of Irrigation Network for Alignment-RD-02 | 2027-02-07 → 2027-02-24 (+17d) | 2027-02-09 → 2027-02-27 (+18d) |
| CO-IR-ML-240 | Installation Works for Bulbblers And Sprinkler and Irrigation Control System of Irrigation Network for Alignment-RD-02 | 2027-02-10 → 2027-02-28 (+18d) | 2027-02-13 → 2027-03-02 (+17d) |
| CO-IR-ML-230 | Trench Backfilling and Compaction Works for Main Lines of Irrigation Network for Alignment-RD-02 | 2027-02-14 → 2027-03-03 (+17d) | 2027-02-16 → 2027-03-06 (+18d) |
| MV | **Medium Voltage Network** | 2027-02-27 → 2027-03-21 (+22d) | 2027-03-15 → 2027-04-03 (+19d) |
| CW | **Cabling Works** | 2027-02-27 → 2027-03-21 (+22d) | 2027-03-15 → 2027-04-03 (+19d) |
| CO-MV-ML-310 | Trench Excavation and Bedding Works for Medium Voltage Network for Alignment-RD-02 | 2027-02-27 → 2027-03-21 (+22d) | 2027-03-02 → 2027-03-24 (+22d) |
| CO-MV-ML-320 | Duct Laying Works for Medium Voltage Network for Alignment-RD-02 | 2027-03-03 → 2027-03-25 (+22d) | 2027-03-07 → 2027-03-29 (+22d) |
| CO-MV-ML-330 | Trench Backfilling and Compaction Works for Medium Voltage Network for Alignment-RD-02 | 2027-03-08 → 2027-03-30 (+22d) | 2027-03-15 → 2027-04-03 (+19d) |
| LV | **Low Voltage Network** | 2027-02-17 → 2027-03-07 (+18d) | 2027-04-06 → 2027-04-25 (+19d) |
| MLVC | **Main Low Voltage Cables Works ( Cable 300 MM )** | 2027-02-17 → 2027-03-07 (+18d) | 2027-03-31 → 2027-04-19 (+19d) |
| CON-LV-ML-170 | Cable Laying Works for Main Cable of Low Voltage Network for Alignment-RD-02 | 2027-02-17 → 2027-03-07 (+18d) | 2027-03-02 → 2027-03-23 (+21d) |
| CON-LV-ML-160 | Trench Excavation and Bedding Works for Main Cable of Low Voltage Network for Alignment-RD-02 | 2027-03-16 → 2027-04-04 (+19d) | 2027-03-21 → 2027-04-08 (+18d) |
| CON-LV-ML-180 | Trench Backfilling and Compaction Works for Main Cable of Low Voltage Network for Alignment-RD-02 | 2027-03-22 → 2027-04-10 (+19d) | 2027-03-31 → 2027-04-19 (+19d) |
| SLVC | **Service Low Voltage Cables Works ( Cable 70 MM )** | 2027-03-22 → 2027-04-10 (+19d) | 2027-04-06 → 2027-04-25 (+19d) |
| CON-LV-HC-160 | Trench Excavation and Bedding Works for Service Cable of Low Voltage Network for Alignment-RD-02 | 2027-03-22 → 2027-04-10 (+19d) | 2027-03-25 → 2027-04-13 (+19d) |
| CON-LV-HC-170 | Cable Laying Works for Service Cable of Low Voltage Network for Alignment-RD-02 | 2027-03-27 → 2027-04-14 (+18d) | 2027-04-01 → 2027-04-20 (+19d) |
| CON-LV-HC-180 | Trench Backfilling and Compaction Works for Service Cable of Low Voltage Network for Alignment-RD-02 | 2027-04-03 → 2027-04-21 (+18d) | 2027-04-06 → 2027-04-25 (+19d) |
| DP | **Distribution Pillars Works** | 2027-03-16 → 2027-04-04 (+19d) | 2027-03-31 → 2027-04-19 (+19d) |
| CON-LV-DP-160 | Foundation Excavation Works for Distribution Pillars of Low Voltage Network for Alignment-RD-02 | 2027-03-16 → 2027-04-04 (+19d) | 2027-03-22 → 2027-04-10 (+19d) |
| CON-LV-DP-170 | Pouring Plain Concrete For Distribution Pillar Units of Low Voltage Network for Alignment-RD-02 | 2027-03-23 → 2027-04-11 (+19d) | 2027-03-27 → 2027-04-14 (+18d) |
| CON-LV-DP-180 | Installation Works for Distribution Pillar Units of Low Voltage Network for Alignment-RD-02 | 2027-03-28 → 2027-04-15 (+18d) | 2027-03-31 → 2027-04-19 (+19d) |
| SL | **Street Lighting Network** | 2027-03-23 → 2027-04-11 (+19d) | 2027-04-15 → 2027-05-04 (+19d) |
| LP | **Lighting Poles Works** | 2027-03-23 → 2027-04-11 (+19d) | 2027-04-04 → 2027-04-22 (+18d) |
| CO-SL-LP-400 | Installation Works for Lighting Poles Foundation of Street Lighting Network for Alignment-RD-02 | 2027-03-23 → 2027-04-11 (+19d) | 2027-03-27 → 2027-04-14 (+18d) |
| CO-SL-LP-410 | Installation Works for Lighting Poles of Street Lighting Network for Alignment-RD-02 | 2027-03-28 → 2027-04-15 (+18d) | 2027-03-31 → 2027-04-19 (+19d) |
| CO-SL-LP-430 | Backfilling Works for Lighting Poles of Street Lighting Network for Alignment-RD-02 | 2027-04-01 → 2027-04-20 (+19d) | 2027-04-04 → 2027-04-22 (+18d) |
| CW | **Cabling Works** | 2027-03-23 → 2027-04-11 (+19d) | 2027-03-30 → 2027-04-18 (+19d) |
| CO-SL-CL-320 | Cable Laying Works for Street Lighting Network for Alignment-RD-02 | 2027-03-23 → 2027-04-11 (+19d) | 2027-03-27 → 2027-04-14 (+18d) |
| CO-SL-CL-330 | Trench Backfilling and Compaction Works for Street Lighting Network for Alignment-RD-02 | 2027-03-28 → 2027-04-15 (+18d) | 2027-03-30 → 2027-04-18 (+19d) |
| DPB | **Distrubution Panel Boards** | 2027-04-05 → 2027-04-24 (+19d) | 2027-04-15 → 2027-05-04 (+19d) |
| CO-SL-DB-330 | Installation Works for Panel Board Concrete Foundations of Street Lighting Network for Alignment-RD-02 | 2027-04-05 → 2027-04-24 (+19d) | 2027-04-07 → 2027-04-26 (+19d) |
| CO-SL-DB-340 | Installation Works for Lighting Panel Boards of Street Lighting Network for Alignment-RD-02 | 2027-04-08 → 2027-04-27 (+19d) | 2027-04-15 → 2027-05-04 (+19d) |
| TE | **Telecom and Light Current Network** | 2027-03-16 → 2027-04-04 (+19d) | 2027-04-27 → 2027-05-22 (+25d) |
| PD | **Ducts Works** | 2027-04-17 → 2027-05-05 (+18d) | 2027-04-27 → 2027-05-22 (+25d) |
| CO-TE-DW-190 | Pipes Laying Works for Ducts of Telecom Network for Alignment-RD-02 | 2027-04-17 → 2027-05-05 (+18d) | 2027-04-21 → 2027-05-10 (+19d) |
| CO-TE-DW-200 | Trench Backfilling and Compaction Works for Ducts of Telecom Network for Alignment-RD-02 | 2027-04-22 → 2027-05-11 (+19d) | 2027-04-27 → 2027-05-22 (+25d) |
| MH | **Manholes Works** | 2027-03-16 → 2027-04-04 (+19d) | 2027-03-25 → 2027-04-13 (+19d) |
| CO-TE-MH-200 | Excavation Works for Manholes of Telecom Network for Alignment-RD-02 | 2027-03-16 → 2027-04-04 (+19d) | 2027-03-18 → 2027-04-06 (+19d) |
| CO-TE-MH-210 | Installation Works for Manholes of Telecom Network for Alignment-RD-02 | 2027-03-20 → 2027-04-07 (+18d) | 2027-03-22 → 2027-04-10 (+19d) |
| CO-TE-MH-220 | Backfilling Works for Manholes of Telecom Network for Alignment-RD-02 | 2027-03-23 → 2027-04-11 (+19d) | 2027-03-25 → 2027-04-13 (+19d) |
| DD | **CCTV, Telephone, MSN, ACs System Works** | 2027-03-27 → 2027-04-14 (+18d) | 2027-04-01 → 2027-04-20 (+19d) |
| CO-TE-CTV-180 | Installation of CCTV, Telephone, ACS and MSN Systems Cables for Alignment-RD-02 | 2027-03-27 → 2027-04-14 (+18d) | 2027-04-01 → 2027-04-20 (+19d) |
| RD | **Road Works** | 2027-04-07 → 2027-04-26 (+19d) | 2027-05-06 → 2027-05-31 (+25d) |
| LS | **Pavement Works** | 2027-04-07 → 2027-04-26 (+19d) | 2027-04-22 → 2027-05-11 (+19d) |
| CO-RD-PV-200 | Fixing of Curbstone for Sidewalks Pavement for Alignment-RD-02 | 2027-04-07 → 2027-04-26 (+19d) | 2027-04-12 → 2027-05-01 (+19d) |
| CO-RD-PV-210 | Fixing of Interlock Tiles for Sidewalks Pavement for Alignment-RD-02 | 2027-04-13 → 2027-05-02 (+19d) | 2027-04-22 → 2027-05-11 (+19d) |
| TS | **Traffic Signs Boards and Roads Marking** | 2027-04-28 → 2027-05-23 (+25d) | 2027-05-06 → 2027-05-31 (+25d) |
| CO-RD-F-RM-200 | Application of Road Marking Works For Road Works for Alignment-RD-02 | 2027-04-28 → 2027-05-23 (+25d) | 2027-05-02 → 2027-05-26 (+24d) |

| ID | Task | Start | Finish |
| --- | --- | --- | --- |
| CO-RD-F-TS-140 | Installation Works of Traffic Signs Boards For Road Works for Alignment-RD-02 | 2027-05-03 → 2027-05-27 (+24d) | 2027-05-06 → 2027-05-31 (+25d) |
| 3 | **Finishes for Infrastructure Networks** | 2027-03-16 → 2027-04-04 (+19d) | 2027-05-26 → 2027-06-14 (+19d) |
| 11 | **Storm Drainage Network** | 2027-04-17 → 2027-05-05 (+18d) | 2027-05-26 → 2027-06-14 (+19d) |
| TF | **Testing and Finishes** | 2027-04-17 → 2027-05-05 (+18d) | 2027-05-26 → 2027-06-14 (+19d) |
| CO-SD-ML-TF-120 | Testing Work for Pipes of Storm Drainage Network for Alignment-RD-02 | 2027-04-17 → 2027-05-05 (+18d) | 2027-04-22 → 2027-05-11 (+19d) |
| CO-SD-CB-TF-220 | Catch Basin Internal Finishes (Benching ) for Storm Drainage Network for Alignment-RD-02 | 2027-04-28 → 2027-05-23 (+25d) | 2027-05-04 → 2027-05-29 (+25d) |
| CO-SD-MH-TF-250 | Testing Works for Manholes of Storm Drainage Network for Alignment-RD-02 | 2027-04-28 → 2027-05-23 (+25d) | 2027-05-04 → 2027-05-29 (+25d) |
| CO-SD-CB-TF-200 | Testing Works for Catch Basins of Storm Drainage Network for Alignment-RD-02 | 2027-05-05 → 2027-05-30 (+25d) | 2027-05-11 → 2027-06-05 (+25d) |
| CO-SD-CB-TF-210 | Install Catch Basin Cover Works for External Finishes of Storm Drainage Network for Alignment-RD-02 | 2027-05-12 → 2027-06-06 (+25d) | 2027-05-26 → 2027-06-14 (+19d) |
| 10 | **Sewage Network** | 2027-04-04 → 2027-04-24 (+20d) | 2027-04-24 → 2027-05-13 (+19d) |
| TF | **Testing and Finishes** | 2027-04-04 → 2027-04-24 (+20d) | 2027-04-24 → 2027-05-13 (+19d) |
| CO-SW-TF-270 | Final Testing For Main Line of Sewage Network for Alignment-RD-02 | 2027-04-04 → 2027-04-24 (+20d) | 2027-04-24 → 2027-05-13 (+19d) |
| CO-SW-TF-290 | Testing Works for Main Line Manholes of Sewage Network for Alignment-RD-02 | 2027-04-04 → 2027-04-24 (+20d) | 2027-04-24 → 2027-05-13 (+19d) |
| 9 | **Potable Water Network** | 2027-03-31 → 2027-04-20 (+20d) | 2027-05-04 → 2027-05-30 (+26d) |
| TF | **Testing and Finishes** | 2027-03-31 → 2027-04-20 (+20d) | 2027-05-04 → 2027-05-30 (+26d) |
| CO-PW-TF-170 | Fire Hydrant Finishies (S.Box + Safety + Marker Post ) of Potable Water Network for Alignment-RD-02 | 2027-03-31 → 2027-04-20 (+20d) | 2027-04-15 → 2027-05-05 (+20d) |
| CO-PW-TF-180 | Final Finishes works and Covers for Valves and Valve Chambers for Alignment-RD-02 | 2027-04-17 → 2027-05-06 (+19d) | 2027-04-25 → 2027-05-20 (+25d) |
| CO-PW-TF-160 | Testing of Potable Water Network for Alignment-RD-02 | 2027-04-26 → 2027-05-22 (+26d) | 2027-05-04 → 2027-05-30 (+26d) |
| 13 | **Irrigation Network** | 2027-04-12 → 2027-05-02 (+20d) | 2027-04-15 → 2027-05-05 (+20d) |
| TF | **Testing and Finishes** | 2027-04-12 → 2027-05-02 (+20d) | 2027-04-15 → 2027-05-05 (+20d) |
| CO-IR-TF-180 | Final Testing (pressure tests) of Irrigation Network for Alignment-RD-02 | 2027-04-12 → 2027-05-02 (+20d) | 2027-04-15 → 2027-05-05 (+20d) |
| 1 | **Treated Sewage Effluent (Tse)** | 2027-04-27 → 2027-05-23 (+26d) | 2027-05-03 → 2027-05-29 (+26d) |
| TF | **Testing and Finishes** | 2027-04-27 → 2027-05-23 (+26d) | 2027-05-03 → 2027-05-29 (+26d) |
| CO-TSE-TF-190 | Final Testing (pressure tests) of Treated Sewage Effluent (Tse) for Alignment-RD-02 | 2027-04-27 → 2027-05-23 (+26d) | 2027-05-03 → 2027-05-29 (+26d) |
| 14 | **Medium Voltage Network** | 2027-03-16 → 2027-04-04 (+19d) | 2027-03-22 → 2027-04-10 (+19d) |
| TT | **Termination and Testing Works** | 2027-03-16 → 2027-04-04 (+19d) | 2027-03-22 → 2027-04-10 (+19d) |
| CO-MV-TF-240 | Testing and Termination Works of Medium Voltage Network for Alignment-RD-02 | 2027-03-16 → 2027-04-04 (+19d) | 2027-03-22 → 2027-04-10 (+19d) |
| 6 | **Low Voltage Network** | 2027-04-05 → 2027-04-25 (+20d) | 2027-04-13 → 2027-05-03 (+20d) |
| TT | **Termination and Testing Works** | 2027-04-05 → 2027-04-25 (+20d) | 2027-04-13 → 2027-05-03 (+20d) |
| CON-LV-TT-150 | Testing and Termination Works for Distribution Pillars Units of Low Voltage Network for Alignment-RD-02 | 2027-04-05 → 2027-04-25 (+20d) | 2027-04-08 → 2027-04-28 (+20d) |
| CON-LV-TT-140 | Testing and Termination Works for Substation Low Voltage Panel Boards of Low Voltage Network for Alignment-RD-02 | 2027-04-10 → 2027-04-29 (+19d) | 2027-04-13 → 2027-05-03 (+20d) |
| 1 | **Earthing System Works** | 2027-04-10 → 2027-04-29 (+19d) | 2027-04-11 → 2027-05-01 (+20d) |
| CON-LV-ES-120 | Earthing System Works for Distribution Pillars Units of Low Voltage Network for Alignment-RD-02 | 2027-04-10 → 2027-04-29 (+19d) | 2027-04-11 → 2027-05-01 (+20d) |
| 12 | **Street Lighting Network** | 2027-04-08 → 2027-04-27 (+19d) | 2027-04-26 → 2027-05-20 (+24d) |
| TR | **Termination and Testing Works** | 2027-04-08 → 2027-04-27 (+19d) | 2027-04-26 → 2027-05-20 (+24d) |
| CO-SL-LP-420 | Installation Works for Lighting Fixtures With Drop Wire of Street Lighting Network for Alignment-RD-02 | 2027-04-08 → 2027-04-27 (+19d) | 2027-04-10 → 2027-04-28 (+18d) |
| CO-SL-TF-440 | Termination Works For Panel Board Cables of Street Lighting Network for Alignment-RD-02 | 2027-04-17 → 2027-05-05 (+18d) | 2027-04-22 → 2027-05-11 (+19d) |
| CO-SL-TF-450 | Testing Works for Lighting Poles of Street Lighting Network for Alignment-RD-02 | 2027-04-25 → 2027-05-13 (+18d) | 2027-04-26 → 2027-05-20 (+24d) |
| CO-SL-TF-460 | Testing Works For Panel Board Cables of Street Lighting Network for Alignment-RD-02 | 2027-04-25 → 2027-05-13 (+18d) | 2027-04-26 → 2027-05-20 (+24d) |
| ES | **Earthing System Works** | 2027-04-11 → 2027-04-29 (+18d) | 2027-04-24 → 2027-05-12 (+18d) |
| CO-SL-ES-260 | Install Earthing System Works for Lighting Poles of Street Lighting Network for Alignment-RD-02 | 2027-04-11 → 2027-04-29 (+18d) | 2027-04-17 → 2027-05-05 (+18d) |
| CO-SL-ES-270 | Install Earthing System Works for Lighting Panel Boards of Street Lighting Network for Alignment-RD-02 | 2027-04-18 → 2027-05-06 (+18d) | 2027-04-24 → 2027-05-12 (+18d) |
| 3 | **Telecom and Light Current Network** | 2027-04-10 → 2027-04-29 (+19d) | 2027-04-15 → 2027-05-05 (+20d) |
| 1 | **Testing and Finishes** | 2027-04-10 → 2027-04-29 (+19d) | 2027-04-15 → 2027-05-05 (+20d) |
| CO-TE-CTV-TF-220 | Testing and Interface modules with Telecom for Alignment-RD-02 | 2027-04-10 → 2027-04-29 (+19d) | 2027-04-12 → 2027-05-02 (+20d) |
| CO-TE-CTV-TF-350 | Testing and Interface modules with CCTV, Telephone, MSN and Access Control for Alignment-RD-02 | 2027-04-13 → 2027-05-03 (+20d) | 2027-04-15 → 2027-05-05 (+20d) |
| 3 | **Alignment-RD-03-1** | 2026-09-28 → 2026-10-19 (+21d) | 2027-04-19 → 2027-05-09 (+20d) |
| EW | **Earthworks** | 2026-09-28 → 2026-10-19 (+21d) | 2026-10-11 → 2026-11-01 (+21d) |
| EW | **Earthworks** | 2026-09-28 → 2026-10-19 (+21d) | 2026-10-11 → 2026-11-01 (+21d) |
| CO-EW-200 | Excavation and Backfilling Works Upto Design Level for Earthworks for Alignment-RD-03-1 | 2026-09-28 → 2026-10-19 (+21d) | 2026-10-11 → 2026-11-01 (+21d) |
| SD | **Storm Drainage Network** | 2026-10-12 → 2026-11-02 (+21d) | 2026-11-25 → 2026-12-09 (+14d) |
| MH | **Manholes** | 2026-10-12 → 2026-11-02 (+21d) | 2026-11-18 → 2026-12-09 (+21d) |
| CO-SD-MH-180 | Trench Excavation and Bedding Works for Manholes of Storm Drainage Network for Alignment-RD-03-1 | 2026-10-12 → 2026-11-02 (+21d) | 2026-10-22 → 2026-11-12 (+21d) |
| CO-SD-MH-190 | Install RC Footing Works for Manholes of Storm Drainage Network for Alignment-RD-03-1 | 2026-10-24 → 2026-11-14 (+21d) | 2026-10-26 → 2026-11-16 (+21d) |
| CO-SD-MH-200 | Install RC Wall Rings & Slab Works for Manholes of Storm Drainage Network for Alignment-RD-03-1 | 2026-10-27 → 2026-11-17 (+21d) | 2026-11-07 → 2026-11-28 (+21d) |
| CO-SD-MH-220 | Backfilling Works for Manholes of Storm Drainage Network for Alignment-RD-03-1 | 2026-11-08 → 2026-11-29 (+21d) | 2026-11-18 → 2026-12-09 (+21d) |
| ML | **Main Line Sections** | 2026-11-08 → 2026-11-29 (+21d) | 2026-11-25 → 2026-12-09 (+14d) |
| CO-SD-ML-100 | Trench Excavation and Bedding Works for Main Lines of Storm Drainage Network for Alignment-RD-03-1 | 2026-11-08 → 2026-11-29 (+21d) | 2026-11-10 → 2026-12-01 (+21d) |
| CO-SD-ML-120 | Pipes Laying Works for Main Lines of Storm Drainage Network for Alignment-RD-03-1 | 2026-11-18 → 2026-12-02 (+14d) | 2026-11-21 → 2026-12-05 (+14d) |
| CO-SD-ML-130 | Trench Backfilling and Compaction Works for Main Lines of Storm Drainage Network for Alignment-RD-03-1 | 2026-11-22 → 2026-12-06 (+14d) | 2026-11-25 → 2026-12-09 (+14d) |
| TSE | **Treated Sewage Effluent (Tse)** | 2026-11-29 → 2026-12-17 (+18d) | 2027-04-18 → 2027-05-08 (+20d) |
| CO-TSE-ML-150 | Trench Excavation and Bedding Works for Main Lines of Treated Sewage Effluent (Tse) for Alignment-RD-03-1 | 2026-11-29 → 2026-12-17 (+18d) | 2026-12-02 → 2026-12-21 (+19d) |
| CO-TSE-ML-160 | Pipes Laying Works for Main Lines of Treated Sewage Effluent (Tse) for Alignment-RD-03-1 | 2026-12-03 → 2026-12-22 (+19d) | 2026-12-07 → 2026-12-26 (+19d) |
| CO-TSE-ML-170 | Installation Works for Main Line Valves of Treated Sewage Effluent (Tse) for Alignment-RD-03-1 | 2026-12-08 → 2026-12-27 (+19d) | 2026-12-14 → 2027-01-02 (+19d) |
| CO-TSE-ML-190 | Installation Works for Valve and Washout Chambers of Treated Sewage Effluent (Tse) for Alignment-RD-03-1 | 2026-12-15 → 2027-01-03 (+19d) | 2026-12-21 → 2027-01-09 (+19d) |
| CO-TSE-ML-180 | Trench Backfilling and Compaction Works for Treated Sewage Effluent (Tse) for Alignment-RD-03-1 | 2026-12-22 → 2027-01-10 (+19d) | 2026-12-27 → 2027-01-14 (+18d) |
| TA | **Treated Sewage Effluent (Tse) Storage Tank** | 2027-04-12 → 2027-05-02 (+20d) | 2027-04-18 → 2027-05-08 (+20d) |
| CO-TSE-TF-180 | Installation of Storage Tank of Treated Sewage Effluent (Tse) for Alignment-RD-03-1 | 2027-04-12 → 2027-05-02 (+20d) | 2027-04-18 → 2027-05-08 (+20d) |
| PW | **Potable Water Network** | 2026-12-28 → 2027-01-16 (+19d) | 2027-04-11 → 2027-05-01 (+20d) |
| ML | **Main Line Sections** | 2026-12-28 → 2027-01-16 (+19d) | 2027-01-23 → 2027-02-03 (+11d) |

| ID | Task | Start | Finish |
| --- | --- | --- | --- |
| CO-PW-ML-100 | Trench Excavation and Bedding Works for Main Lines of Potable Water Network for Alignment-RD-03-1 | 2026-12-28 → 2027-01-16 (+19d) | 2027-01-02 → 2027-01-20 (+18d) |
| CO-PW-ML-110 | Pipes Laying and accessories for Main Lines of Potable Water Network for Alignment-RD-03-1 | 2027-01-10 → 2027-01-21 (+11d) | 2027-01-14 → 2027-01-26 (+12d) |
| CO-PW-ML-130 | Trench Backfilling and Compaction Works for Main Lines of Potable Water Network for Alignment-RD-03-1 | 2027-01-16 → 2027-01-27 (+11d) | 2027-01-23 → 2027-02-03 (+11d) |
| VC | **Valve Chamber** | 2026-12-30 → 2027-01-18 (+19d) | 2027-02-09 → 2027-02-06 (-3d) |
| CO-PW-VC-170 | Excavation Works for Main Line Valves and Valve Chambers of Potable Water Network for Alignment-RD-03-1 | 2026-12-30 → 2027-01-18 (+19d) | 2027-01-02 → 2027-01-20 (+18d) |
| CO-PW-VC180 | Installation of Valve Chambers of Potable Water Network for Alignment-RD-03-1 | 2027-01-06 → 2027-01-21 (+15d) | 2027-01-09 → 2027-01-24 (+15d) |
| CO-PW-VC-190 | Installation Works for Valves of Potable Water Network for Alignment-RD-03-1 | 2027-02-03 → 2027-01-31 (-3d) | 2027-02-06 → 2027-02-02 (-4d) |
| CO-PW-VC-220 | Backfilling Works for Main Line Valves and Valve Chambers of Potable Water Network for Alignment-RD-03-1 | 2027-02-07 → 2027-02-03 (-4d) | 2027-02-09 → 2027-02-06 (-3d) |
| FH | **Fire Hydrant** | 2027-01-03 → 2027-01-21 (+18d) | 2027-02-09 → 2027-02-06 (-3d) |
| CO-PW-FH-140 | Excavation Works for Fire Hydrants of Potable Water Network for Alignment-RD-03-1 | 2027-01-03 → 2027-01-21 (+18d) | 2027-01-04 → 2027-01-23 (+19d) |
| CO-PW-FH-150 | Installation Works for Fire Hydrant of Potable Water Network for Alignment-RD-03-1 | 2027-01-16 → 2027-01-27 (+11d) | 2027-01-17 → 2027-01-28 (+11d) |
| CO-PW-FH-160 | Trench Backfilling and Compaction Works for Fire Hydrants of Potable Water Network for Alignment-RD-03-1 | 2027-02-08 → 2027-02-04 (-4d) | 2027-02-09 → 2027-02-06 (-3d) |
| TA | **Potable Water Network Storage Tank** | 2027-04-05 → 2027-04-25 (+20d) | 2027-04-11 → 2027-05-01 (+20d) |
| CO-PW-TF-130 | Installation of Storage Tank of Potable Water Network for Alignment-RD-03-1 | 2027-04-05 → 2027-04-25 (+20d) | 2027-04-11 → 2027-05-01 (+20d) |
| LV | **Low Voltage Network** | 2027-01-24 → 2027-02-04 (+11d) | 2027-03-15 → 2027-04-03 (+19d) |
| MLVC | **Main Low Voltage Cables Works ( Cable 300 MM )** | 2027-01-24 → 2027-02-04 (+11d) | 2027-02-14 → 2027-02-25 (+11d) |
| CON-LV-ML-100 | Trench Excavation and Bedding Works for Main Cable of Low Voltage Network for Alignment-RD-03-1 | 2027-01-24 → 2027-02-04 (+11d) | 2027-02-01 → 2027-02-13 (+12d) |
| CON-LV-ML-110 | Cable Laying Works for Main Cable of Low Voltage Network for Alignment-RD-03-1 | 2027-02-02 → 2027-02-14 (+12d) | 2027-02-09 → 2027-02-21 (+12d) |
| CON-LV-ML-120 | Trench Backfilling and Compaction Works for Main Cable of Low Voltage Network for Alignment-RD-03-1 | 2027-02-10 → 2027-02-22 (+12d) | 2027-02-14 → 2027-02-25 (+11d) |
| SLVC | **Service Low Voltage Cables Works ( Cable 70 MM )** | 2027-02-10 → 2027-02-14 (+4d) | 2027-02-25 → 2027-03-20 (+23d) |
| CON-LV-HC-100 | Trench Excavation and Bedding Works for Service Cable of Low Voltage Network for Alignment-RD-03-1 | 2027-02-10 → 2027-02-14 (+4d) | 2027-02-14 → 2027-02-17 (+3d) |
| CON-LV-HC-110 | Cable Laying Works for Service Cable of Low Voltage Network for Alignment-RD-03-1 | 2027-02-15 → 2027-03-06 (+19d) | 2027-02-22 → 2027-03-16 (+22d) |
| CON-LV-HC-120 | Trench Backfilling and Compaction Works for Service Cable of Low Voltage Network for Alignment-RD-03-1 | 2027-02-23 → 2027-03-17 (+22d) | 2027-02-25 → 2027-03-20 (+23d) |
| DP | **Distribution Pillars Works** | 2027-02-27 → 2027-03-21 (+22d) | 2027-03-15 → 2027-04-03 (+19d) |
| CON-LV-DP-100 | Foundation Excavation Works for Distribution Pillars of Low Voltage Network for Alignment-RD-03-1 | 2027-02-27 → 2027-03-21 (+22d) | 2027-03-02 → 2027-03-24 (+22d) |
| CON-LV-DP-110 | Pouring Plain Concrete For Distribution Pillar Units of Low Voltage Network for Alignment-RD-03-1 | 2027-03-03 → 2027-03-25 (+22d) | 2027-03-07 → 2027-03-29 (+22d) |
| CON-LV-DP-120 | Installation Works for Distribution Pillar Units of Low Voltage Network for Alignment-RD-03-1 | 2027-03-08 → 2027-03-30 (+22d) | 2027-03-15 → 2027-04-03 (+19d) |
| SL | **Street Lighting Network** | 2027-02-14 → 2027-03-06 (+20d) | 2027-03-08 → 2027-03-31 (+23d) |
| LP | **Lighting Poles Works** | 2027-02-14 → 2027-03-06 (+20d) | 2027-03-03 → 2027-03-27 (+24d) |
| CO-SL-LP-550 | Installation Works for Lighting Poles Foundation of Street Lighting Network for Alignment-RD-03-1 | 2027-02-14 → 2027-03-06 (+20d) | 2027-02-18 → 2027-03-14 (+24d) |
| CO-SL-LP-560 | Installation Works for Lighting Poles of Street Lighting Network for Alignment-RD-03-1 | 2027-02-20 → 2027-03-15 (+23d) | 2027-02-24 → 2027-03-20 (+24d) |
| CO-SL-LP-570 | Backfilling Works for Lighting Poles of Street Lighting Network for Alignment-RD-03-1 | 2027-02-25 → 2027-03-21 (+24d) | 2027-03-03 → 2027-03-27 (+24d) |
| CW | **Cabling Works** | 2027-02-25 → 2027-03-21 (+24d) | 2027-03-08 → 2027-03-31 (+23d) |
| CO-SL-CL-410 | Cable Laying Works for Street Lighting Network for Alignment-RD-03-1 | 2027-02-25 → 2027-03-21 (+24d) | 2027-03-02 → 2027-03-25 (+23d) |
| CO-SL-CL-420 | Trench Backfilling and Compaction Works for Street Lighting Network for Alignment-RD-03-1 | 2027-03-03 → 2027-03-27 (+24d) | 2027-03-08 → 2027-03-31 (+23d) |
| TE | **Telecom and Light Current Network** | 2027-03-04 → 2027-03-28 (+24d) | 2027-03-21 → 2027-04-10 (+20d) |
| PD | **Ducts Works** | 2027-03-13 → 2027-04-01 (+19d) | 2027-03-21 → 2027-04-10 (+20d) |
| CO-TE-DW-110 | Pipes Laying Works for Ducts of Telecom Network for Alignment-RD-03-1 | 2027-03-13 → 2027-04-01 (+19d) | 2027-03-16 → 2027-04-05 (+20d) |
| CO-TE-DW-130 | Trench Backfilling and Compaction Works for Ducts of Telecom Network for Alignment-RD-03-1 | 2027-03-17 → 2027-04-06 (+20d) | 2027-03-21 → 2027-04-10 (+20d) |
| MH | **Manholes Works** | 2027-03-04 → 2027-03-28 (+24d) | 2027-03-14 → 2027-04-03 (+20d) |
| CO-TE-MH-140 | Excavation Works for Manholes of Telecom Network for Alignment-RD-03-1 | 2027-03-04 → 2027-03-28 (+24d) | 2027-03-06 → 2027-03-29 (+23d) |
| CO-TE-MH-150 | Installation Works for Manholes of Telecom Network for Alignment-RD-03-1 | 2027-03-07 → 2027-03-30 (+23d) | 2027-03-08 → 2027-03-31 (+23d) |
| CO-TE-MH-160 | Backfilling Works for Manholes of Telecom Network for Alignment-RD-03-1 | 2027-03-13 → 2027-04-01 (+19d) | 2027-03-14 → 2027-04-03 (+20d) |
| DD | **CCTV, Telephone, MSN, ACs System Works** | 2027-03-15 → 2027-04-04 (+20d) | 2027-03-18 → 2027-04-07 (+20d) |
| CO-TE-CTV-110 | Installation of CCTV, Telephone, ACS and MSN Systems Cables for Alignment-RD-03-1 | 2027-03-15 → 2027-04-04 (+20d) | 2027-03-18 → 2027-04-07 (+20d) |
| RD | **Road Works** | 2027-03-22 → 2027-04-11 (+20d) | 2027-04-15 → 2027-05-05 (+20d) |
| RD | **Pre-Bituminous Construction** | 2027-03-22 → 2027-04-11 (+20d) | 2027-04-06 → 2027-04-26 (+20d) |
| CO-RD-PB-140 | Subgrade Layer for Road Works for Alignment-RD-03-1 | 2027-03-22 → 2027-04-11 (+20d) | 2027-03-29 → 2027-04-18 (+20d) |
| CO-RD-PB-150 | Aggregate Base Course Layer for Road Works for Alignment-RD-03-1 | 2027-03-30 → 2027-04-19 (+20d) | 2027-04-06 → 2027-04-26 (+20d) |
| 1 | **Bituminous Construction** | 2027-03-30 → 2027-04-19 (+20d) | 2027-04-06 → 2027-04-26 (+20d) |
| CO-RD-B-160 | Bituminous Base Courses Layers for Road Works for Alignment-RD-03-1 | 2027-03-30 → 2027-04-19 (+20d) | 2027-03-31 → 2027-04-20 (+20d) |
| CON-RD-MR-150 | Preparation of Asphaltic Wearing Course Layer for Roads Network for Alignment-RD-03-1 | 2027-04-05 → 2027-04-25 (+20d) | 2027-04-06 → 2027-04-26 (+20d) |
| LS | **Pavement Works** | 2027-04-01 → 2027-04-21 (+20d) | 2027-04-15 → 2027-05-05 (+20d) |
| CO-RD-PV-160 | Fixing of Curbstone for Sidewalks Pavement for Alignment-RD-03-1 | 2027-04-01 → 2027-04-21 (+20d) | 2027-04-06 → 2027-04-26 (+20d) |
| CO-RD-PV-170 | Fixing of Interlock Tiles for Sidewalks Pavement for Alignment-RD-03-1 | 2027-04-07 → 2027-04-27 (+20d) | 2027-04-15 → 2027-05-05 (+20d) |
| TS | **Traffic Signs Boards and Roads Marking** | 2027-04-07 → 2027-04-27 (+20d) | 2027-04-11 → 2027-05-01 (+20d) |
| CO-RD-F-RM-180 | Application of Road Marking Works For Road Works for Alignment-RD-03-1 | 2027-04-07 → 2027-04-27 (+20d) | 2027-04-08 → 2027-04-28 (+20d) |
| CO-RD-F-TS-120 | Installation Works of Traffic Signs Boards For Road Works for Alignment-RD-03-1 | 2027-04-10 → 2027-04-29 (+19d) | 2027-04-11 → 2027-05-01 (+20d) |
| 3 | **Finishes for Infrastructure Networks** | 2027-03-16 → 2027-04-04 (+19d) | 2027-04-19 → 2027-05-09 (+20d) |
| 11 | **Storm Drainage Network** | 2027-04-04 → 2027-04-24 (+20d) | 2027-04-10 → 2027-04-29 (+19d) |
| TF | **Testing and Finishes** | 2027-04-04 → 2027-04-24 (+20d) | 2027-04-10 → 2027-04-29 (+19d) |
| CO-SD-ML-TF-100 | Testing Work for Pipes of Storm Drainage Network for Alignment-RD-03-1 | 2027-04-04 → 2027-04-24 (+20d) | 2027-04-06 → 2027-04-26 (+20d) |
| CO-SD-MH-TF-210 | Testing Works for Manholes of Storm Drainage Network for Alignment-RD-03-1 | 2027-04-07 → 2027-04-27 (+20d) | 2027-04-10 → 2027-04-29 (+19d) |
| 9 | **Potable Water Network** | 2027-03-31 → 2027-04-20 (+20d) | 2027-04-04 → 2027-04-24 (+20d) |
| TF | **Testing and Finishes** | 2027-03-31 → 2027-04-20 (+20d) | 2027-04-04 → 2027-04-24 (+20d) |
| CO-PW-TF-100 | Final Finishes works and Covers for Valves and Valve Chambers for Alignment-RD-03-1 | 2027-03-31 → 2027-04-20 (+20d) | 2027-04-04 → 2027-04-24 (+20d) |
| CO-PW-TF-110 | Testing of Potable Water Network for Alignment-RD-03-1 | 2027-03-31 → 2027-04-20 (+20d) | 2027-04-01 → 2027-04-21 (+20d) |
| CO-PW-TF-120 | Fire Hydrant Finishies (S.Box + Safety + Marker Post ) of Potable Water Network for Alignment-RD-03-1 | 2027-03-31 → 2027-04-20 (+20d) | 2027-04-03 → 2027-04-22 (+19d) |
| 1 | **Treated Sewage Effluent (Tse)** | 2027-04-19 → 2027-05-09 (+20d) | 2027-04-19 → 2027-05-09 (+20d) |
| TF | **Testing and Finishes** | 2027-04-19 → 2027-05-09 (+20d) | 2027-04-19 → 2027-05-09 (+20d) |

| ID | Task | Start | Finish |
| --- | --- | --- | --- |
| CO-TSE-TF-170 | Final Testing (pressure tests) of Treated Sewage Effluent (Tse) for Alignment-RD-03-1 | 2027-04-19 → 2027-05-09 (+20d) | 2027-04-19 → 2027-05-09 (+20d) |
| 6 | **Low Voltage Network** | 2027-03-16 → 2027-04-04 (+19d) | 2027-03-20 → 2027-04-07 (+18d) |
| TT | **Termination and Testing Works** | 2027-03-16 → 2027-04-04 (+19d) | 2027-03-20 → 2027-04-07 (+18d) |
| CON-LV-TT-110 | Testing and Termination Works for Distribution Pillars Units of Low Voltage Network for Alignment-RD-03-1 | 2027-03-16 → 2027-04-04 (+19d) | 2027-03-17 → 2027-04-05 (+19d) |
| CON-LV-TT-100 | Testing and Termination Works for Substation Low Voltage Panel Boards of Low Voltage Network for Alignment-RD-03-1 | 2027-03-18 → 2027-04-06 (+19d) | 2027-03-20 → 2027-04-07 (+18d) |
| 1 | **Earthing System Works** | 2027-03-18 → 2027-04-06 (+19d) | 2027-03-20 → 2027-04-07 (+18d) |
| CON-LV-ES-100 | Earthing System Works for Distribution Pillars Units of Low Voltage Network for Alignment-RD-03-1 | 2027-03-18 → 2027-04-06 (+19d) | 2027-03-20 → 2027-04-07 (+18d) |
| 12 | **Street Lighting Network** | 2027-03-24 → 2027-04-13 (+20d) | 2027-04-12 → 2027-05-02 (+20d) |
| TR | **Termination and Testing Works** | 2027-03-24 → 2027-04-13 (+20d) | 2027-04-12 → 2027-05-02 (+20d) |
| CO-SL-LP-580 | Installation Works for Lighting Fixtures With Drop Wire of Street Lighting Network for Alignment-RD-03-1 | 2027-03-24 → 2027-04-13 (+20d) | 2027-03-30 → 2027-04-19 (+20d) |
| CO-SL-TF-570 | Testing Works for Lighting Poles of Street Lighting Network for Alignment-RD-03-1 | 2027-04-06 → 2027-04-26 (+20d) | 2027-04-12 → 2027-05-02 (+20d) |
| ES | **Earthing System Works** | 2027-03-31 → 2027-04-20 (+20d) | 2027-04-05 → 2027-04-25 (+20d) |
| CO-SL-ES-320 | Install Earthing System Works for Lighting Poles of Street Lighting Network for Alignment-RD-03-1 | 2027-03-31 → 2027-04-20 (+20d) | 2027-04-03 → 2027-04-22 (+19d) |
| CO-SL-ES-330 | Install Earthing System Works for Lighting Panel Boards of Street Lighting Network for Alignment-RD-03-1 | 2027-04-04 → 2027-04-24 (+20d) | 2027-04-05 → 2027-04-25 (+20d) |
| 3 | **Telecom and Light Current Network** | 2027-03-20 → 2027-04-08 (+19d) | 2027-03-25 → 2027-04-14 (+20d) |
| 1 | **Testing and Finishes** | 2027-03-20 → 2027-04-08 (+19d) | 2027-03-25 → 2027-04-14 (+20d) |
| CO-TE-CTV-TF-140 | Testing and Interface modules with Telecom for Alignment-RD-03-1 | 2027-03-20 → 2027-04-08 (+19d) | 2027-03-25 → 2027-04-14 (+20d) |
| CO-TE-CTV-TF-330 | Testing and Interface modules with CCTV, Telephone, MSN and Access Control for Alignment-RD-03-1 | 2027-03-20 → 2027-04-08 (+19d) | 2027-03-25 → 2027-04-14 (+20d) |
| 2 | **Alignment-RD-03-2** | 2026-10-03 → 2026-10-21 (+18d) | 2027-05-22 → 2027-06-10 (+19d) |
| EW | **Earthworks** | 2026-10-03 → 2026-10-21 (+18d) | 2026-10-15 → 2026-11-03 (+19d) |
| EW | **Earthworks** | 2026-10-03 → 2026-10-21 (+18d) | 2026-10-15 → 2026-11-03 (+19d) |
| CO-EW-240 | Excavation and Backfilling Works Upto Design Level for Earthworks for Alignment-RD-03-2 | 2026-10-03 → 2026-10-21 (+18d) | 2026-10-15 → 2026-11-03 (+19d) |
| SD | **Storm Drainage Network** | 2026-11-26 → 2026-12-10 (+14d) | 2027-01-19 → 2027-02-02 (+14d) |
| MH | **Manholes** | 2026-11-26 → 2026-12-10 (+14d) | 2027-01-06 → 2027-01-20 (+14d) |
| CO-SD-MH-350 | Trench Excavation and Bedding Works for Manholes of Storm Drainage Network for Alignment-RD-03-2 | 2026-11-26 → 2026-12-10 (+14d) | 2026-12-07 → 2026-12-21 (+14d) |
| CO-SD-MH-360 | Install RC Footing Works for Manholes of Storm Drainage Network for Alignment-RD-03-2 | 2026-12-08 → 2026-12-22 (+14d) | 2026-12-17 → 2026-12-31 (+14d) |
| CO-SD-MH-370 | Install RC Wall Rings & Slab Works for Manholes of Storm Drainage Network for Alignment-RD-03-2 | 2026-12-19 → 2027-01-02 (+14d) | 2026-12-29 → 2027-01-12 (+14d) |
| CO-SD-MH-380 | Backfilling Works for Manholes of Storm Drainage Network for Alignment-RD-03-2 | 2026-12-30 → 2027-01-13 (+14d) | 2027-01-06 → 2027-01-20 (+14d) |
| ML | **Main Line Sections** | 2026-12-30 → 2027-01-13 (+14d) | 2027-01-19 → 2027-02-02 (+14d) |
| CO-SD-ML-230 | Trench Excavation and Bedding Works for Main Lines of Storm Drainage Network for Alignment-RD-03-2 | 2026-12-30 → 2027-01-13 (+14d) | 2027-01-06 → 2027-01-20 (+14d) |
| CO-SD-ML-240 | Pipes Laying Works for Main Lines of Storm Drainage Network for Alignment-RD-03-2 | 2027-01-07 → 2027-01-21 (+14d) | 2027-01-12 → 2027-01-26 (+14d) |
| CO-SD-ML-250 | Trench Backfilling and Compaction Works for Main Lines of Storm Drainage Network for Alignment-RD-03-2 | 2027-01-13 → 2027-01-27 (+14d) | 2027-01-19 → 2027-02-02 (+14d) |
| MV | **Medium Voltage Network** | 2027-02-08 → 2027-02-28 (+20d) | 2027-02-25 → 2027-03-21 (+24d) |
| CW | **Cabling Works** | 2027-02-08 → 2027-02-28 (+20d) | 2027-02-25 → 2027-03-21 (+24d) |
| CO-MV-ML-370 | Trench Excavation and Bedding Works for Medium Voltage Network for Alignment-RD-03-2 | 2027-02-08 → 2027-02-28 (+20d) | 2027-02-13 → 2027-03-04 (+19d) |
| CO-MV-ML-380 | Duct Laying Works for Medium Voltage Network for Alignment-RD-03-2 | 2027-02-15 → 2027-03-07 (+20d) | 2027-02-20 → 2027-03-15 (+23d) |
| CO-MV-ML-390 | Trench Backfilling and Compaction Works for Medium Voltage Network for Alignment-RD-03-2 | 2027-02-22 → 2027-03-17 (+23d) | 2027-02-25 → 2027-03-21 (+24d) |
| LV | **Low Voltage Network** | 2027-03-01 → 2027-03-24 (+23d) | 2027-04-07 → 2027-04-27 (+20d) |
| MLVC | **Main Low Voltage Cables Works ( Cable 300 MM )** | 2027-03-01 → 2027-03-24 (+23d) | 2027-03-28 → 2027-04-17 (+20d) |
| CON-LV-ML-220 | Trench Excavation and Bedding Works for Main Cable of Low Voltage Network for Alignment-RD-03-2 | 2027-03-01 → 2027-03-24 (+23d) | 2027-03-07 → 2027-03-30 (+23d) |
| CON-LV-ML-230 | Cable Laying Works for Main Cable of Low Voltage Network for Alignment-RD-03-2 | 2027-03-08 → 2027-03-31 (+23d) | 2027-03-21 → 2027-04-10 (+20d) |
| CON-LV-ML-240 | Trench Backfilling and Compaction Works for Main Cable of Low Voltage Network for Alignment-RD-03-2 | 2027-03-22 → 2027-04-11 (+20d) | 2027-03-28 → 2027-04-17 (+20d) |
| SLVC | **Service Low Voltage Cables Works ( Cable 70 MM )** | 2027-03-08 → 2027-03-31 (+23d) | 2027-04-07 → 2027-04-27 (+20d) |
| CON-LV-HC-220 | Trench Excavation and Bedding Works for Service Cable of Low Voltage Network for Alignment-RD-03-2 | 2027-03-08 → 2027-03-31 (+23d) | 2027-03-16 → 2027-04-05 (+20d) |
| CON-LV-HC-230 | Cable Laying Works for Service Cable of Low Voltage Network for Alignment-RD-03-2 | 2027-03-22 → 2027-04-11 (+20d) | 2027-03-31 → 2027-04-20 (+20d) |
| CON-LV-HC-240 | Trench Backfilling and Compaction Works for Service Cable of Low Voltage Network for Alignment-RD-03-2 | 2027-04-01 → 2027-04-21 (+20d) | 2027-04-07 → 2027-04-27 (+20d) |
| DP | **Distribution Pillars Works** | 2027-03-13 → 2027-04-01 (+19d) | 2027-03-24 → 2027-04-13 (+20d) |
| CON-LV-DP-220 | Foundation Excavation Works for Distribution Pillars of Low Voltage Network for Alignment-RD-03-2 | 2027-03-13 → 2027-04-01 (+19d) | 2027-03-20 → 2027-04-08 (+19d) |
| CON-LV-DP-230 | Pouring Plain Concrete For Distribution Pillar Units of Low Voltage Network for Alignment-RD-03-2 | 2027-03-21 → 2027-04-10 (+20d) | 2027-03-22 → 2027-04-11 (+20d) |
| CON-LV-DP-240 | Installation Works for Distribution Pillar Units of Low Voltage Network for Alignment-RD-03-2 | 2027-03-23 → 2027-04-12 (+20d) | 2027-03-24 → 2027-04-13 (+20d) |
| SL | **Street Lighting Network** | 2027-02-14 → 2027-03-06 (+20d) | 2027-03-13 → 2027-04-01 (+19d) |
| LP | **Lighting Poles Works** | 2027-02-14 → 2027-03-06 (+20d) | 2027-03-03 → 2027-03-27 (+24d) |
| CO-SL-LP-500 | Installation Works for Lighting Poles Foundation of Street Lighting Network for Alignment-RD-03-2 | 2027-02-14 → 2027-03-06 (+20d) | 2027-02-18 → 2027-03-14 (+24d) |
| CO-SL-LP-510 | Installation Works for Lighting Poles of Street Lighting Network for Alignment-RD-03-2 | 2027-02-20 → 2027-03-15 (+23d) | 2027-02-24 → 2027-03-20 (+24d) |
| CO-SL-LP-520 | Backfilling Works for Lighting Poles of Street Lighting Network for Alignment-RD-03-2 | 2027-02-25 → 2027-03-21 (+24d) | 2027-03-03 → 2027-03-27 (+24d) |
| CW | **Cabling Works** | 2027-02-27 → 2027-03-22 (+23d) | 2027-03-13 → 2027-04-01 (+19d) |
| CO-SL-CL-380 | Cable Laying Works for Street Lighting Network for Alignment-RD-03-2 | 2027-02-27 → 2027-03-22 (+23d) | 2027-03-03 → 2027-03-27 (+24d) |
| CO-SL-CL-390 | Trench Backfilling and Compaction Works for Street Lighting Network for Alignment-RD-03-2 | 2027-03-04 → 2027-03-28 (+24d) | 2027-03-13 → 2027-04-01 (+19d) |
| TE | **Telecom and Light Current Network** | 2027-04-08 → 2027-04-28 (+20d) | 2027-04-11 → 2027-05-01 (+20d) |
| DD | **CCTV, Telephone, MSN, ACs System Works** | 2027-04-08 → 2027-04-28 (+20d) | 2027-04-11 → 2027-05-01 (+20d) |
| CO-TE-CTV-240 | Installation of CCTV, Telephone, ACS and MSN Systems Cables for Alignment-RD-03-2 | 2027-04-08 → 2027-04-28 (+20d) | 2027-04-11 → 2027-05-01 (+20d) |
| RD | **Road Works** | 2027-04-08 → 2027-04-28 (+20d) | 2027-05-22 → 2027-06-10 (+19d) |
| RD | **Pre-Bituminous Construction** | 2027-04-08 → 2027-04-28 (+20d) | 2027-04-19 → 2027-05-09 (+20d) |
| CO-RD-PB-220 | Subgrade Layer for Road Works for Alignment-RD-03-2 | 2027-04-08 → 2027-04-28 (+20d) | 2027-04-13 → 2027-05-03 (+20d) |
| CO-RD-PB-230 | Installation of Aggregate Base Course Layer and Interlock Works for Road Works for Alignment-RD-03-2 | 2027-04-14 → 2027-05-04 (+20d) | 2027-04-19 → 2027-05-09 (+20d) |
| 1 | **Bituminous Construction** | 2027-04-20 → 2027-05-10 (+20d) | 2027-05-06 → 2027-06-01 (+26d) |
| CO-RD-B-240 | Bituminous Base Courses Layers for Road Works for Alignment-RD-03-2 | 2027-04-20 → 2027-05-10 (+20d) | 2027-04-22 → 2027-05-12 (+20d) |
| CON-RD-MR-230 | Preparation of Asphaltic Wearing Course Layer for Roads Network for Alignment-RD-03-2 | 2027-05-04 → 2027-05-30 (+26d) | 2027-05-06 → 2027-06-01 (+26d) |
| LS | **Pavement Works** | 2027-04-24 → 2027-05-13 (+19d) | 2027-05-09 → 2027-06-03 (+25d) |
| CO-RD-PV-240 | Fixing of Curbstone for Sidewalks Pavement for Alignment-RD-03-2 | 2027-04-24 → 2027-05-13 (+19d) | 2027-05-01 → 2027-05-26 (+25d) |

| ID | Task | Start | Finish |
| --- | --- | --- | --- |
| CO-RD-PV-250 | Fixing of Interlock Tiles for Sidewalks Pavement for Alignment-RD-03-2 | 2027-05-02 → 2027-05-27 (+25d) | 2027-05-09 → 2027-06-03 (+25d) |
| TS | **Traffic Signs Boards and Roads Marking** | 2027-05-10 → 2027-06-05 (+26d) | 2027-05-22 → 2027-06-10 (+19d) |
| CO-RD-F-RM-220 | Application of Road Marking Works For Road Works for Alignment-RD-03-2 | 2027-05-10 → 2027-06-05 (+26d) | 2027-05-12 → 2027-06-07 (+26d) |
| CO-RD-F-TS-160 | Installation Works of Traffic Signs Boards For Road Works for Alignment-RD-03-2 | 2027-05-13 → 2027-06-08 (+26d) | 2027-05-22 → 2027-06-10 (+19d) |
| 3 | **Finishes for Infrastructure Networks** | 2027-02-27 → 2027-03-22 (+23d) | 2027-05-03 → 2027-05-29 (+26d) |
| 11 | **Storm Drainage Network** | 2027-04-15 → 2027-05-05 (+20d) | 2027-05-03 → 2027-05-29 (+26d) |
| TF | **Testing and Finishes** | 2027-04-15 → 2027-05-05 (+20d) | 2027-05-03 → 2027-05-29 (+26d) |
| CO-SD-MH-TF-290 | Testing Works for Manholes of Storm Drainage Network for Alignment-RD-03-2 | 2027-04-15 → 2027-05-05 (+20d) | 2027-04-21 → 2027-05-11 (+20d) |
| CO-SD-CB-TF-260 | Testing Works for Catch Basins of Storm Drainage Network for Alignment-RD-03-2 | 2027-04-24 → 2027-05-13 (+19d) | 2027-05-03 → 2027-05-29 (+26d) |
| 14 | **Medium Voltage Network** | 2027-02-27 → 2027-03-22 (+23d) | 2027-03-04 → 2027-03-28 (+24d) |
| TT | **Termination and Testing Works** | 2027-02-27 → 2027-03-22 (+23d) | 2027-03-04 → 2027-03-28 (+24d) |
| CO-MV-TF-260 | Testing and Termination Works of Medium Voltage Network for Alignment-RD-03-2 | 2027-02-27 → 2027-03-22 (+23d) | 2027-03-04 → 2027-03-28 (+24d) |
| 6 | **Low Voltage Network** | 2027-03-25 → 2027-04-14 (+20d) | 2027-04-15 → 2027-05-05 (+20d) |
| TT | **Termination and Testing Works** | 2027-03-25 → 2027-04-14 (+20d) | 2027-04-15 → 2027-05-05 (+20d) |
| CON-LV-TT-190 | Testing and Termination Works for Distribution Pillars Units of Low Voltage Network for Alignment-RD-03-2 | 2027-03-25 → 2027-04-14 (+20d) | 2027-03-31 → 2027-04-20 (+20d) |
| CON-LV-TT-180 | Testing and Termination Works for Substation Low Voltage Panel Boards of Low Voltage Network for Alignment-RD-03-2 | 2027-04-08 → 2027-04-28 (+20d) | 2027-04-15 → 2027-05-05 (+20d) |
| 1 | **Earthing System Works** | 2027-04-01 → 2027-04-21 (+20d) | 2027-04-03 → 2027-04-22 (+19d) |
| CON-LV-ES-140 | Earthing System Works for Distribution Pillars Units of Low Voltage Network for Alignment-RD-03-2 | 2027-04-01 → 2027-04-21 (+20d) | 2027-04-03 → 2027-04-22 (+19d) |
| 12 | **Street Lighting Network** | 2027-03-17 → 2027-04-06 (+20d) | 2027-04-01 → 2027-04-22 (+21d) |
| TR | **Termination and Testing Works** | 2027-03-17 → 2027-04-06 (+20d) | 2027-04-01 → 2027-04-22 (+21d) |
| CO-SL-LP-530 | Installation Works for Lighting Fixtures With Drop Wire of Street Lighting Network for Alignment-RD-03-2 | 2027-03-17 → 2027-04-06 (+20d) | 2027-03-23 → 2027-04-12 (+20d) |
| CO-SL-TF-530 | Testing Works for Lighting Poles of Street Lighting Network for Alignment-RD-03-2 | 2027-03-27 → 2027-04-17 (+21d) | 2027-04-01 → 2027-04-22 (+21d) |
| ES | **Earthing System Works** | 2027-03-27 → 2027-04-17 (+21d) | 2027-03-31 → 2027-04-21 (+21d) |
| CO-SL-ES-300 | Install Earthing System Works for Lighting Poles of Street Lighting Network for Alignment-RD-03-2 | 2027-03-27 → 2027-04-17 (+21d) | 2027-03-29 → 2027-04-19 (+21d) |
| CO-SL-ES-310 | Install Earthing System Works for Lighting Panel Boards of Street Lighting Network for Alignment-RD-03-2 | 2027-03-30 → 2027-04-20 (+21d) | 2027-03-31 → 2027-04-21 (+21d) |
| 3 | **Telecom and Light Current Network** | 2027-04-12 → 2027-05-02 (+20d) | 2027-04-15 → 2027-05-05 (+20d) |
| 1 | **Testing and Finishes** | 2027-04-12 → 2027-05-02 (+20d) | 2027-04-15 → 2027-05-05 (+20d) |
| CO-TE-CTV-TF-320 | Testing and Interface modules with CCTV, Telephone, MSN and Access Control for Alignment-RD-03-2 | 2027-04-12 → 2027-05-02 (+20d) | 2027-04-15 → 2027-05-05 (+20d) |
| 4 | **Alignment-RD-03-3** | 2026-10-12 → 2026-11-02 (+21d) | 2027-04-26 → 2027-05-22 (+26d) |
| EW | **Earthworks** | 2026-10-12 → 2026-11-02 (+21d) | 2026-10-24 → 2026-11-14 (+21d) |
| EW | **Earthworks** | 2026-10-12 → 2026-11-02 (+21d) | 2026-10-24 → 2026-11-14 (+21d) |
| CO-EW-230 | Excavation and Backfilling Works Upto Design Level for Earthworks for Alignment-RD-03-3 | 2026-10-12 → 2026-11-02 (+21d) | 2026-10-24 → 2026-11-14 (+21d) |
| SD | **Storm Drainage Network** | 2026-11-11 → 2026-12-02 (+21d) | 2026-11-29 → 2026-12-13 (+14d) |
| ML | **Main Line Sections** | 2026-11-11 → 2026-12-02 (+21d) | 2026-11-29 → 2026-12-13 (+14d) |
| CO-SD-ML-200 | Trench Excavation and Bedding Works for Main Lines of Storm Drainage Network for Alignment-RD-03-3 | 2026-11-11 → 2026-12-02 (+21d) | 2026-11-14 → 2026-12-05 (+21d) |
| CO-SD-ML-210 | Pipes Laying Works for Main Lines of Storm Drainage Network for Alignment-RD-03-3 | 2026-11-22 → 2026-12-06 (+14d) | 2026-11-24 → 2026-12-08 (+14d) |
| CO-SD-ML-220 | Trench Backfilling and Compaction Works for Main Lines of Storm Drainage Network for Alignment-RD-03-3 | 2026-11-26 → 2026-12-10 (+14d) | 2026-11-29 → 2026-12-13 (+14d) |
| TSE | **Treated Sewage Effluent (Tse)** | 2026-11-30 → 2026-12-14 (+14d) | 2027-01-06 → 2027-01-20 (+14d) |
| CO-TSE-ML-300 | Trench Excavation and Bedding Works for Main Lines of Treated Sewage Effluent (Tse) for Alignment-RD-03-3 | 2026-11-30 → 2026-12-14 (+14d) | 2026-12-12 → 2026-12-26 (+14d) |
| CO-TSE-ML-310 | Pipes Laying Works for Main Lines of Treated Sewage Effluent (Tse) for Alignment-RD-03-3 | 2026-12-13 → 2026-12-27 (+14d) | 2026-12-24 → 2027-01-07 (+14d) |
| CO-TSE-ML-330 | Trench Backfilling and Compaction Works for Treated Sewage Effluent (Tse) for Alignment-RD-03-3 | 2026-12-26 → 2027-01-09 (+14d) | 2027-01-06 → 2027-01-20 (+14d) |
| PW | **Potable Water Network** | 2027-01-07 → 2027-01-21 (+14d) | 2027-02-20 → 2027-02-27 (+7d) |
| ML | **Main Line Sections** | 2027-01-07 → 2027-01-21 (+14d) | 2027-02-10 → 2027-02-24 (+14d) |
| CO-PW-ML-200 | Trench Excavation and Bedding Works for Main Lines of Potable Water Network for Alignment-RD-03-3 | 2027-01-07 → 2027-01-21 (+14d) | 2027-01-18 → 2027-02-01 (+14d) |
| CO-PW-ML-210 | Pipes Laying and accessories for Main Lines of Potable Water Network for Alignment-RD-03-3 | 2027-01-19 → 2027-02-02 (+14d) | 2027-01-30 → 2027-02-13 (+14d) |
| CO-PW-ML-220 | Trench Backfilling and Compaction Works for Main Lines of Potable Water Network for Alignment-RD-03-3 | 2027-01-31 → 2027-02-14 (+14d) | 2027-02-10 → 2027-02-24 (+14d) |
| VC | **Valve Chamber** | 2027-01-07 → 2027-01-21 (+14d) | 2027-02-20 → 2027-02-27 (+7d) |
| CO-PW-VC-290 | Excavation Works for Main Line Valves and Valve Chambers of Potable Water Network for Alignment-RD-03-3 | 2027-01-07 → 2027-01-21 (+14d) | 2027-01-18 → 2027-02-01 (+14d) |
| CO-PW-VC210 | Installation of Valve Chambers of Potable Water Network for Alignment-RD-03-3 | 2027-01-19 → 2027-02-02 (+14d) | 2027-01-30 → 2027-02-13 (+14d) |
| CO-PW-VC-300 | Installation Works for Valves of Potable Water Network for Alignment-RD-03-3 | 2027-02-07 → 2027-02-14 (+7d) | 2027-02-16 → 2027-02-23 (+7d) |
| CO-PW-VC-310 | Backfilling Works for Main Line Valves and Valve Chambers of Potable Water Network for Alignment-RD-03-3 | 2027-02-17 → 2027-02-24 (+7d) | 2027-02-20 → 2027-02-27 (+7d) |
| FH | **Fire Hydrant** | 2027-01-19 → 2027-02-02 (+14d) | 2027-02-20 → 2027-02-27 (+7d) |
| CO-PW-FH-230 | Excavation Works for Fire Hydrants of Potable Water Network for Alignment-RD-03-3 | 2027-01-19 → 2027-02-02 (+14d) | 2027-01-30 → 2027-02-13 (+14d) |
| CO-PW-FH-240 | Installation Works for Fire Hydrant of Potable Water Network for Alignment-RD-03-3 | 2027-01-31 → 2027-02-14 (+14d) | 2027-02-10 → 2027-02-24 (+14d) |
| CO-PW-FH-250 | Trench Backfilling and Compaction Works for Fire Hydrants of Potable Water Network for Alignment-RD-03-3 | 2027-02-18 → 2027-02-25 (+7d) | 2027-02-20 → 2027-02-27 (+7d) |
| IR | **Irrigation Network** | 2027-01-19 → 2027-02-02 (+14d) | 2027-02-13 → 2027-02-27 (+14d) |
| ML | **Main Line Pipes** | 2027-01-19 → 2027-02-02 (+14d) | 2027-02-13 → 2027-02-27 (+14d) |
| CO-IR-ML-350 | Trench Excavation and Bedding Works for Main Lines of Irrigation Network for Alignment-RD-03-3 | 2027-01-19 → 2027-02-02 (+14d) | 2027-01-30 → 2027-02-13 (+14d) |
| CO-IR-ML-360 | Pipes Laying Works for Main Lines of Irrigation Network for Alignment-RD-03-3 | 2027-01-31 → 2027-02-14 (+14d) | 2027-02-02 → 2027-02-16 (+14d) |
| CO-IR-ML-370 | Installation Works for Main Line Valves of Irrigation Network for Alignment-RD-03-3 | 2027-02-03 → 2027-02-17 (+14d) | 2027-02-06 → 2027-02-20 (+14d) |
| CO-IR-ML-390 | Installation Works for Bulbblers And Sprinkler and Irrigation Control System of Irrigation Network for Alignment-RD-03-3 | 2027-02-07 → 2027-02-21 (+14d) | 2027-02-09 → 2027-02-23 (+14d) |
| CO-IR-ML-380 | Trench Backfilling and Compaction Works for Main Lines of Irrigation Network for Alignment-RD-03-3 | 2027-02-10 → 2027-02-24 (+14d) | 2027-02-13 → 2027-02-27 (+14d) |
| MV | **Medium Voltage Network** | 2027-02-14 → 2027-03-06 (+20d) | 2027-02-27 → 2027-03-22 (+23d) |
| CW | **Cabling Works** | 2027-02-14 → 2027-03-06 (+20d) | 2027-02-27 → 2027-03-22 (+23d) |
| CO-MV-ML-340 | Trench Excavation and Bedding Works for Medium Voltage Network for Alignment-RD-03-3 | 2027-02-14 → 2027-03-06 (+20d) | 2027-02-16 → 2027-03-08 (+20d) |
| CO-MV-ML-350 | Duct Laying Works for Medium Voltage Network for Alignment-RD-03-3 | 2027-02-21 → 2027-03-16 (+23d) | 2027-02-23 → 2027-03-18 (+23d) |
| CO-MV-ML-360 | Trench Backfilling and Compaction Works for Medium Voltage Network for Alignment-RD-03-3 | 2027-02-24 → 2027-03-20 (+24d) | 2027-02-27 → 2027-03-22 (+23d) |
| LV | **Low Voltage Network** | 2027-02-28 → 2027-03-23 (+23d) | 2027-04-04 → 2027-04-24 (+20d) |
| MLVC | **Main Low Voltage Cables Works ( Cable 300 MM )** | 2027-02-28 → 2027-03-23 (+23d) | 2027-03-23 → 2027-04-12 (+20d) |
| CON-LV-ML-190 | Trench Excavation and Bedding Works for Main Cable of Low Voltage Network for Alignment-RD-03-3 | 2027-02-28 → 2027-03-23 (+23d) | 2027-03-07 → 2027-03-30 (+23d) |

| ID | Task | Start | Finish | Other |
| --- | --- | --- | --- | --- |
| CON-LV-ML-200 | Cable Laying Works for Main Cable of Low Voltage Network for Alignment-RD-03-3 | 2027-03-08 → 2027-03-31 (+23d) | 2027-03-18 → 2027-04-07 (+20d) |  |
| CON-LV-ML-210 | Trench Backfilling and Compaction Works for Main Cable of Low Voltage Network for Alignment-RD-03-3 | 2027-03-20 → 2027-04-08 (+19d) | 2027-03-23 → 2027-04-12 (+20d) |  |
| SLVC | **Service Low Voltage Cables Works ( Cable 70 MM )** | 2027-03-08 → 2027-03-31 (+23d) | 2027-03-30 → 2027-04-19 (+20d) |  |
| CON-LV-HC-190 | Trench Excavation and Bedding Works for Service Cable of Low Voltage Network for Alignment-RD-03-3 | 2027-03-08 → 2027-03-31 (+23d) | 2027-03-18 → 2027-04-07 (+20d) |  |
| CON-LV-HC-200 | Cable Laying Works for Service Cable of Low Voltage Network for Alignment-RD-03-3 | 2027-03-20 → 2027-04-08 (+19d) | 2027-03-27 → 2027-04-15 (+19d) |  |
| CON-LV-HC-210 | Trench Backfilling and Compaction Works for Service Cable of Low Voltage Network for Alignment-RD-03-3 | 2027-03-28 → 2027-04-17 (+20d) | 2027-03-30 → 2027-04-19 (+20d) |  |
| DP | **Distribution Pillars Works** | 2027-03-31 → 2027-04-20 (+20d) | 2027-04-04 → 2027-04-24 (+20d) |  |
| CON-LV-DP-190 | Installation Works for Distribution Pillar Units of Low Voltage Network for Alignment-RD-03-3 | 2027-03-31 → 2027-04-20 (+20d) | 2027-04-04 → 2027-04-24 (+20d) |  |
| SL | **Street Lighting Network** | 2027-02-28 → 2027-03-23 (+23d) | 2027-03-23 → 2027-04-12 (+20d) |  |
| LP | **Lighting Poles Works** | 2027-02-28 → 2027-03-23 (+23d) | 2027-03-23 → 2027-04-12 (+20d) |  |
| CO-SL-LP-450 | Installation Works for Lighting Poles Foundation of Street Lighting Network for Alignment-RD-03-3 | 2027-02-28 → 2027-03-23 (+23d) | 2027-03-06 → 2027-03-29 (+23d) |  |
| CO-SL-LP-460 | Installation Works for Lighting Poles of Street Lighting Network for Alignment-RD-03-3 | 2027-03-07 → 2027-03-30 (+23d) | 2027-03-16 → 2027-04-05 (+20d) |  |
| CO-SL-LP-480 | Backfilling Works for Lighting Poles of Street Lighting Network for Alignment-RD-03-3 | 2027-03-17 → 2027-04-06 (+20d) | 2027-03-23 → 2027-04-12 (+20d) |  |
| CW | **Cabling Works** | 2027-03-17 → 2027-04-06 (+20d) | 2027-03-23 → 2027-04-12 (+20d) |  |
| CO-SL-CL-350 | Cable Laying Works for Street Lighting Network for Alignment-RD-03-3 | 2027-03-17 → 2027-04-06 (+20d) | 2027-03-23 → 2027-04-12 (+20d) |  |
| CO-SL-CL-360 | Trench Backfilling and Compaction Works for Street Lighting Network for Alignment-RD-03-3 | 2027-03-17 → 2027-04-06 (+20d) | 2027-03-23 → 2027-04-12 (+20d) |  |
| TE | **Telecom and Light Current Network** | 2027-03-13 → 2027-04-01 (+19d) | 2027-04-11 → 2027-05-01 (+20d) |  |
| PD | **Ducts Works** | 2027-03-31 → 2027-04-20 (+20d) | 2027-04-11 → 2027-05-01 (+20d) |  |
| CO-TE-DW-230 | Pipes Laying Works for Ducts of Telecom Network for Alignment-RD-03-3 | 2027-03-31 → 2027-04-20 (+20d) | 2027-04-06 → 2027-04-26 (+20d) |  |
| CO-TE-DW-240 | Trench Backfilling and Compaction Works for Ducts of Telecom Network for Alignment-RD-03-3 | 2027-04-07 → 2027-04-27 (+20d) | 2027-04-11 → 2027-05-01 (+20d) |  |
| MH | **Manholes Works** | 2027-03-13 → 2027-04-01 (+19d) | 2027-03-21 → 2027-04-10 (+20d) |  |
| CO-TE-MH-230 | Excavation Works for Manholes of Telecom Network for Alignment-RD-03-3 | 2027-03-13 → 2027-04-01 (+19d) | 2027-03-14 → 2027-04-03 (+20d) |  |
| CO-TE-MH-240 | Installation Works for Manholes of Telecom Network for Alignment-RD-03-3 | 2027-03-15 → 2027-04-04 (+20d) | 2027-03-17 → 2027-04-06 (+20d) |  |
| CO-TE-MH-250 | Backfilling Works for Manholes of Telecom Network for Alignment-RD-03-3 | 2027-03-18 → 2027-04-07 (+20d) | 2027-03-21 → 2027-04-10 (+20d) |  |
| DD | **CCTV, Telephone, MSN, ACs System Works** | 2027-03-22 → 2027-04-11 (+20d) | 2027-03-24 → 2027-04-13 (+20d) |  |
| CO-TE-CTV-210 | Installation of CCTV, Telephone, ACS and MSN Systems Cables for Alignment-RD-03-3 | 2027-03-22 → 2027-04-11 (+20d) | 2027-03-24 → 2027-04-13 (+20d) |  |
| RD | **Road Works** | 2027-04-07 → 2027-04-27 (+20d) | 2027-04-15 → 2027-05-05 (+20d) |  |
| LS | **Pavement Works** | 2027-04-07 → 2027-04-27 (+20d) | 2027-04-11 → 2027-05-01 (+20d) |  |
| CO-RD-PV-220 | Fixing of Curbstone for Sidewalks Pavement for Alignment-RD-03-3 | 2027-04-07 → 2027-04-27 (+20d) | 2027-04-11 → 2027-05-01 (+20d) |  |
| CO-RD-PV-230 | Fixing of Interlock Tiles for Sidewalks Pavement for Alignment-RD-03-3 | 2027-04-07 → 2027-04-27 (+20d) | 2027-04-11 → 2027-05-01 (+20d) |  |
| TS | **Traffic Signs Boards and Roads Marking** | 2027-04-07 → 2027-04-27 (+20d) | 2027-04-15 → 2027-05-05 (+20d) |  |
| CO-RD-F-RM-210 | Application of Road Marking Works For Road Works for Alignment-RD-03-3 | 2027-04-07 → 2027-04-27 (+20d) | 2027-04-10 → 2027-04-29 (+19d) |  |
| CO-RD-F-TS-150 | Installation Works of Traffic Signs Boards For Road Works for Alignment-RD-03-3 | 2027-04-12 → 2027-05-02 (+20d) | 2027-04-15 → 2027-05-05 (+20d) |  |
| 3 | **Finishes for Infrastructure Networks** | 2027-02-28 → 2027-03-23 (+23d) | 2027-04-26 → 2027-05-22 (+26d) |  |
| 11 | **Storm Drainage Network** | 2027-04-11 → 2027-04-29 (+18d) | 2027-04-15 → 2027-05-04 (+19d) |  |
| TF | **Testing and Finishes** | 2027-04-11 → 2027-04-29 (+18d) | 2027-04-15 → 2027-05-04 (+19d) |  |
| CO-SD-ML-TF-130 | Testing Work for Pipes of Storm Drainage Network for Alignment-RD-03-3 | 2027-04-11 → 2027-04-29 (+18d) | 2027-04-15 → 2027-05-04 (+19d) |  |
| 9 | **Potable Water Network** | 2027-03-31 → 2027-04-20 (+20d) | 2027-04-07 → 2027-04-27 (+20d) |  |
| TF | **Testing and Finishes** | 2027-03-31 → 2027-04-20 (+20d) | 2027-04-07 → 2027-04-27 (+20d) |  |
| CO-PW-TF-200 | Fire Hydrant Finishies (S.Box + Safety + Marker Post ) of Potable Water Network for Alignment-RD-03-3 | 2027-03-31 → 2027-04-20 (+20d) | 2027-04-03 → 2027-04-22 (+19d) |  |
| CO-PW-TF-190 | Testing of Potable Water Network for Alignment-RD-03-3 | 2027-04-04 → 2027-04-24 (+20d) | 2027-04-06 → 2027-04-26 (+20d) |  |
| CO-PW-TF-210 | Final Finishes works and Covers for Valves and Valve Chambers for Alignment-RD-03-3 | 2027-04-04 → 2027-04-24 (+20d) | 2027-04-07 → 2027-04-27 (+20d) |  |
| 1 | **Treated Sewage Effluent (Tse)** | 2027-04-20 → 2027-05-10 (+20d) | 2027-04-26 → 2027-05-22 (+26d) |  |
| TF | **Testing and Finishes** | 2027-04-20 → 2027-05-10 (+20d) | 2027-04-26 → 2027-05-22 (+26d) |  |
| CO-TSE-TF-200 | Final Testing (pressure tests) of Treated Sewage Effluent (Tse) for Alignment-RD-03-3 | 2027-04-20 → 2027-05-10 (+20d) | 2027-04-26 → 2027-05-22 (+26d) |  |
| 13 | **Irrigation Network** | 2027-04-04 → 2027-04-24 (+20d) | 2027-04-10 → 2027-04-29 (+19d) |  |
| TF | **Testing and Finishes** | 2027-04-04 → 2027-04-24 (+20d) | 2027-04-10 → 2027-04-29 (+19d) |  |
| CO-IR-TF-210 | Final Testing (pressure tests) of Irrigation Network for Alignment-RD-03-3 | 2027-04-04 → 2027-04-24 (+20d) | 2027-04-10 → 2027-04-29 (+19d) |  |
| 14 | **Medium Voltage Network** | 2027-02-28 → 2027-03-23 (+23d) | 2027-03-06 → 2027-03-29 (+23d) |  |
| TT | **Termination and Testing Works** | 2027-02-28 → 2027-03-23 (+23d) | 2027-03-06 → 2027-03-29 (+23d) |  |
| CO-MV-TF-250 | Testing and Termination Works of Medium Voltage Network for Alignment-RD-03-3 | 2027-02-28 → 2027-03-23 (+23d) | 2027-03-06 → 2027-03-29 (+23d) |  |
| 6 | **Low Voltage Network** | 2027-04-05 → 2027-04-25 (+20d) | 2027-04-11 → 2027-05-01 (+20d) |  |
| TT | **Termination and Testing Works** | 2027-04-05 → 2027-04-25 (+20d) | 2027-04-11 → 2027-05-01 (+20d) |  |
| CON-LV-TT-160 | Testing and Termination Works for Substation Low Voltage Panel Boards of Low Voltage Network for Alignment-RD-03-3 | 2027-04-05 → 2027-04-25 (+20d) | 2027-04-11 → 2027-05-01 (+20d) |  |
| 12 | **Street Lighting Network** | 2027-03-31 → 2027-04-20 (+20d) | 2027-04-19 → 2027-05-09 (+20d) |  |
| TR | **Termination and Testing Works** | 2027-03-31 → 2027-04-20 (+20d) | 2027-04-19 → 2027-05-09 (+20d) |  |
| CO-SL-LP-470 | Installation Works for Lighting Fixtures With Drop Wire of Street Lighting Network for Alignment-RD-03-3 | 2027-03-31 → 2027-04-20 (+20d) | 2027-04-06 → 2027-04-26 (+20d) |  |
| CO-SL-TF-490 | Testing Works for Lighting Poles of Street Lighting Network for Alignment-RD-03-3 | 2027-04-13 → 2027-05-03 (+20d) | 2027-04-19 → 2027-05-09 (+20d) |  |
| ES | **Earthing System Works** | 2027-03-31 → 2027-04-20 (+20d) | 2027-04-12 → 2027-05-02 (+20d) |  |
| CO-SL-ES-280 | Install Earthing System Works for Lighting Poles of Street Lighting Network for Alignment-RD-03-3 | 2027-03-31 → 2027-04-20 (+20d) | 2027-04-06 → 2027-04-26 (+20d) |  |
| CO-SL-ES-290 | Install Earthing System Works for Lighting Panel Boards of Street Lighting Network for Alignment-RD-03-3 | 2027-04-06 → 2027-04-26 (+20d) | 2027-04-12 → 2027-05-02 (+20d) |  |
| 3 | **Telecom and Light Current Network** | 2027-03-27 → 2027-04-15 (+19d) | 2027-04-08 → 2027-04-28 (+20d) |  |
| 1 | **Testing and Finishes** | 2027-03-27 → 2027-04-15 (+19d) | 2027-04-08 → 2027-04-28 (+20d) |  |
| CO-TE-CTV-TF-260 | Testing and Interface modules with Telecom for Alignment-RD-03-3 | 2027-03-27 → 2027-04-15 (+19d) | 2027-04-01 → 2027-04-21 (+20d) |  |
| CO-TE-CTV-TF-340 | Testing and Interface modules with CCTV, Telephone, MSN and Access Control for Alignment-RD-03-3 | 2027-04-03 → 2027-04-22 (+19d) | 2027-04-08 → 2027-04-28 (+20d) |  |
| EX | **External** |  | 2027-04-13 → 2027-05-04 (+21d) |  |
| 2 | **External Road - 1 - 1** |  | 2027-04-12 → 2027-05-03 (+21d) |  |
| EW | **Earthworks** |  | 2026-12-01 → 2026-12-21 (+20d) |  |
| EW | **Earthworks** |  | 2026-12-01 → 2026-12-21 (+20d) |  |
| CO-EW-250 | Excavation and Backfilling Works Upto Design Level for Earthworks for External Road - 1 - 1(Completed) |  |  | resources Skilled Labor [568.55 h]; Unskilled Labor [568.55 h]; Dozer [568.55 h]; Water Tanker [568.55 h]; Embankments to the Site and Roads (including Roads , Plots and Pond) [35000]; Excavations (including Roads , Plots and Pond) [4514] → Skilled Labor [568.55 h]; Unskilled Labor [568.55 h]; Dozer [568.55 h]; Water Tanker [568.55 h]; Embankments to the Site and Roads (including Roads , Plots and Pond) [79314]; Excavations (including Roads , Plots and Pond) [4514] |

| ID | Task | Start | Finish | Other |
| --- | --- | --- | --- | --- |
| CO-EW-250_R | Excavation and Backfilling Works Upto Design Level for Earthworks for External Road - 1 - 1(Remaining) | 2026-11-23 → 2026-12-13 (+20d) | 2026-12-01 → 2026-12-21 (+20d) | resources Skilled Labor [487.45 h]; Unskilled Labor [487.45 h]; Dozer [487.45 h]; Water Tanker [487.45 h]; Embankments to the Site and Roads (including Roads , Plots and Pond) [63700]; Excavations (including Roads , Plots and Pond) [1287] → Skilled Labor [487.45 h]; Unskilled Labor [487.45 h]; Dozer [487.45 h]; Water Tanker [487.45 h]; Embankments to the Site and Roads (including Roads , Plots and Pond) [19386]; Excavations (including Roads , Plots and Pond) [1287] |
| RD | **Road Works** | 2027-02-24 → 2027-03-21 (+25d) | 2027-04-12 → 2027-05-03 (+21d) |  |
| 3 | **Road 01** | 2027-02-24 → 2027-03-21 (+25d) | 2027-04-12 → 2027-05-03 (+21d) |  |
| RD | **Pre-Bituminous Construction** | 2027-02-24 → 2027-03-21 (+25d) | 2027-03-18 → 2027-04-08 (+21d) |  |
| CO-RD-PB-240 | Subgrade Layer for Road Works for External Road - 1 - 1 | 2027-02-24 → 2027-03-21 (+25d) | 2027-03-04 → 2027-03-29 (+25d) |  |
| CO-RD-PB-250 | Aggregate Base Course Layer for Road Works for External Road - 1 - 1 | 2027-03-06 → 2027-03-30 (+24d) | 2027-03-18 → 2027-04-08 (+21d) |  |
| 1 | **Bituminous Construction** | 2027-03-20 → 2027-04-10 (+21d) | 2027-03-28 → 2027-04-18 (+21d) |  |
| CO-RD-B-260 | Bituminous Base Courses Layers for Road Works for External Road - 1 - 1 | 2027-03-20 → 2027-04-10 (+21d) | 2027-03-23 → 2027-04-13 (+21d) |  |
| CON-RD-MR-250 | Preparation of Asphaltic Wearing Course Layer for Roads Network for External Road - 1 - 1 | 2027-03-24 → 2027-04-14 (+21d) | 2027-03-28 → 2027-04-18 (+21d) |  |
| LS | **Pavement Works** | 2027-03-24 → 2027-04-14 (+21d) | 2027-04-08 → 2027-04-29 (+21d) |  |
| CO-RD-PV-260 | Fixing of Curbstone for Sidewalks Pavement for External Road - 1 - 1 | 2027-03-24 → 2027-04-14 (+21d) | 2027-04-01 → 2027-04-22 (+21d) |  |
| CO-RD-PV-270 | Fixing of Interlock Tiles for Sidewalks Pavement for External Road - 1 - 1 | 2027-04-03 → 2027-04-24 (+21d) | 2027-04-08 → 2027-04-29 (+21d) |  |
| TS | **Traffic Signs Boards and Roads Marking** | 2027-04-10 → 2027-05-01 (+21d) | 2027-04-12 → 2027-05-03 (+21d) |  |
| CO-RD-F-RM-230 | Application of Road Marking Works For Road Works for External Road - 1 - 1 | 2027-04-10 → 2027-05-01 (+21d) | 2027-04-11 → 2027-05-02 (+21d) |  |
| CO-RD-F-TS-170 | Installation Works of Traffic Signs Boards For Road Works for External Road - 1 - 1 | 2027-04-12 → 2027-05-03 (+21d) | 2027-04-12 → 2027-05-03 (+21d) |  |
| 4 | **External Road - 1 - 2** |  | 2027-04-13 → 2027-05-04 (+21d) |  |
| EW | **Earthworks** |  | 2026-12-22 → 2027-01-11 (+20d) |  |
| EW | **Earthworks** |  | 2026-12-22 → 2027-01-11 (+20d) |  |
| CO-EW-280_R | Excavation and Backfilling Works Upto Design Level for Earthworks for External Road - 1 - 2(Remaining) |  | 2026-12-22 → 2027-01-11 (+20d) |  |
| RD | **Road Works** | 2027-02-24 → 2027-03-21 (+25d) | 2027-04-13 → 2027-05-04 (+21d) |  |
| 3 | **Road 01** | 2027-02-24 → 2027-03-21 (+25d) | 2027-04-13 → 2027-05-04 (+21d) |  |
| RD | **Pre-Bituminous Construction** | 2027-02-24 → 2027-03-21 (+25d) | 2027-03-13 → 2027-04-03 (+21d) |  |
| CO-RD-PB-300 | Subgrade Layer for Road Works for External Road - 1 - 2 | 2027-02-24 → 2027-03-21 (+25d) | 2027-03-02 → 2027-03-27 (+25d) |  |
| CO-RD-PB-310 | Aggregate Base Course Layer for Road Works for External Road - 1 - 2 | 2027-03-03 → 2027-03-28 (+25d) | 2027-03-13 → 2027-04-03 (+21d) |  |
| 1 | **Bituminous Construction** | 2027-03-14 → 2027-04-04 (+21d) | 2027-03-25 → 2027-04-15 (+21d) |  |
| CO-RD-B-320 | Bituminous Base Courses Layers for Road Works for External Road - 1 - 2 | 2027-03-14 → 2027-04-04 (+21d) | 2027-03-21 → 2027-04-11 (+21d) |  |
| CON-RD-MR-310 | Preparation of Asphaltic Wearing Course Layer for Roads Network for External Road - 1 - 2 | 2027-03-22 → 2027-04-12 (+21d) | 2027-03-25 → 2027-04-15 (+21d) |  |
| LS | **Pavement Works** | 2027-03-23 → 2027-04-13 (+21d) | 2027-04-05 → 2027-04-26 (+21d) |  |
| CO-RD-PV-320 | Fixing of Curbstone for Sidewalks Pavement for External Road - 1 - 2 | 2027-03-23 → 2027-04-13 (+21d) | 2027-03-29 → 2027-04-19 (+21d) |  |
| CO-RD-PV-330 | Fixing of Interlock Tiles for Sidewalks Pavement for External Road - 1 - 2 | 2027-03-30 → 2027-04-20 (+21d) | 2027-04-05 → 2027-04-26 (+21d) |  |
| TS | **Traffic Signs Boards and Roads Marking** | 2027-04-06 → 2027-04-27 (+21d) | 2027-04-13 → 2027-05-04 (+21d) |  |
| CO-RD-F-RM-260 | Application of Road Marking Works For Road Works for External Road - 1 - 2 | 2027-04-06 → 2027-04-27 (+21d) | 2027-04-10 → 2027-05-01 (+21d) |  |
| CO-RD-F-TS-200 | Installation Works of Traffic Signs Boards For Road Works for External Road - 1 - 2 | 2027-04-11 → 2027-05-02 (+21d) | 2027-04-13 → 2027-05-04 (+21d) |  |
| 1 | **External Road - 2** |  | 2027-04-13 → 2027-05-04 (+21d) |  |
| EW | **Earthworks** |  | 2027-01-16 → 2027-02-04 (+19d) |  |
| EW | **Earthworks** |  | 2027-01-16 → 2027-02-04 (+19d) |  |
| CO-EW-260 | Excavation and Backfilling Works Upto Design Level for Earthworks for External Road - 2(Completed) |  |  | resources Skilled Labor [327.95 h]; Unskilled Labor [327.95 h]; Dozer [327.95 h]; Water Tanker [327.95 h]; Embankments to the Site and Roads (including Roads , Plots and Pond) [6000]; Excavations (including Roads , Plots and Pond) [2377] → Skilled Labor [327.95 h]; Unskilled Labor [327.95 h]; Dozer [327.95 h]; Water Tanker [327.95 h]; Embankments to the Site and Roads (including Roads , Plots and Pond) [40450]; Excavations (including Roads , Plots and Pond) [2377] |
| CO-EW-260_R | Excavation and Backfilling Works Upto Design Level for Earthworks for External Road - 2(Remaining) | 2026-12-23 → 2027-01-12 (+20d) | 2027-01-16 → 2027-02-04 (+19d) | resources Skilled Labor [536.05 h]; Unskilled Labor [536.05 h]; Dozer [536.05 h]; Water Tanker [536.05 h]; Embankments to the Site and Roads (including Roads , Plots and Pond) [65400]; Excavations (including Roads , Plots and Pond) [1820] → Skilled Labor [536.05 h]; Unskilled Labor [536.05 h]; Dozer [536.05 h]; Water Tanker [536.05 h]; Embankments to the Site and Roads (including Roads , Plots and Pond) [30950]; Excavations (including Roads , Plots and Pond) [1820] |
| RD | **Road Works** | 2027-02-17 → 2027-03-14 (+25d) | 2027-04-13 → 2027-05-04 (+21d) |  |
| 3 | **Road 01** | 2027-02-17 → 2027-03-14 (+25d) | 2027-04-13 → 2027-05-04 (+21d) |  |
| RD | **Pre-Bituminous Construction** | 2027-02-17 → 2027-03-14 (+25d) | 2027-02-24 → 2027-03-21 (+25d) |  |
| CO-RD-PB-260 | Subgrade Layer for Road Works for External Road - 2 | 2027-02-17 → 2027-03-14 (+25d) | 2027-02-24 → 2027-03-21 (+25d) |  |
| CO-RD-PB-270 | Aggregate Base Course Layer for Road Works for External Road - 2 | 2027-02-21 → 2027-03-17 (+24d) | 2027-02-24 → 2027-03-21 (+25d) |  |
| 1 | **Bituminous Construction** | 2027-02-25 → 2027-03-22 (+25d) | 2027-03-23 → 2027-04-13 (+21d) |  |
| CO-RD-B-280 | Bituminous Base Courses Layers for Road Works for External Road - 2 | 2027-02-25 → 2027-03-22 (+25d) | 2027-03-08 → 2027-04-01 (+24d) |  |
| CON-RD-MR-270 | Preparation of Asphaltic Wearing Course Layer for Roads Network for External Road - 2 | 2027-03-13 → 2027-04-03 (+21d) | 2027-03-23 → 2027-04-13 (+21d) |  |
| LS | **Pavement Works** | 2027-03-23 → 2027-04-13 (+21d) | 2027-04-01 → 2027-04-22 (+21d) |  |
| CO-RD-PV-280 | Fixing of Curbstone for Sidewalks Pavement for External Road - 2 | 2027-03-23 → 2027-04-13 (+21d) | 2027-04-01 → 2027-04-22 (+21d) |  |
| CO-RD-PV-290 | Fixing of Interlock Tiles for Sidewalks Pavement for External Road - 2 | 2027-03-23 → 2027-04-13 (+21d) | 2027-04-01 → 2027-04-22 (+21d) |  |
| TS | **Traffic Signs Boards and Roads Marking** | 2027-04-03 → 2027-04-24 (+21d) | 2027-04-13 → 2027-05-04 (+21d) |  |
| CO-RD-F-RM-240 | Application of Road Marking Works For Road Works for External Road - 2 | 2027-04-03 → 2027-04-24 (+21d) | 2027-04-13 → 2027-05-04 (+21d) |  |
| CO-RD-F-TS-180 | Installation Works of Traffic Signs Boards For Road Works for External Road - 2 | 2027-04-05 → 2027-04-26 (+21d) | 2027-04-06 → 2027-04-27 (+21d) |  |
| 3 | **External Road - 3** |  | 2027-04-13 → 2027-05-04 (+21d) |  |
| EW | **Earthworks** |  | 2027-01-24 → 2027-02-13 (+20d) |  |
| EW | **Earthworks** |  | 2027-01-24 → 2027-02-13 (+20d) |  |
| CO-EW-270_R | Excavation and Backfilling Works Upto Design Level for Earthworks for External Road - 3(Remaining) |  | 2027-01-24 → 2027-02-13 (+20d) |  |
| TE | **Telecom and Light Current Network** | 2027-01-05 → 2027-01-26 (+21d) | 2027-02-23 → 2027-03-20 (+25d) |  |
| MH | **Manholes Works** | 2027-01-05 → 2027-01-26 (+21d) | 2027-02-16 → 2027-03-13 (+25d) |  |
| CO-TE-MH-290 | Excavation Works for Manholes of Telecom Network for External Road - 3 | 2027-01-05 → 2027-01-26 (+21d) | 2027-01-25 → 2027-02-15 (+21d) |  |
| CO-TE-MH-300 | Installation Works for Manholes of Telecom Network for External Road - 3 | 2027-01-26 → 2027-02-16 (+21d) | 2027-02-16 → 2027-03-13 (+25d) |  |
| CO-TE-MH-310 | Backfilling Works for Manholes of Telecom Network for External Road - 3 | 2027-02-10 → 2027-03-03 (+21d) | 2027-02-16 → 2027-03-13 (+25d) |  |
| 1 | **Testing and Finishes** | 2027-02-17 → 2027-03-14 (+25d) | 2027-02-23 → 2027-03-20 (+25d) |  |
| CO-TE-CTV-TF-360 | Testing and Interface modules with Telecom for External Road - 3 | 2027-02-17 → 2027-03-14 (+25d) | 2027-02-23 → 2027-03-20 (+25d) |  |
| RD | **Road Works** |  | 2027-04-13 → 2027-05-04 (+21d) |  |
| 3 | **Road 01** |  | 2027-04-13 → 2027-05-04 (+21d) |  |
| RD | **Pre-Bituminous Construction** |  | 2027-03-04 → 2027-03-29 (+25d) |  |
| CO-RD-PB-280 | Subgrade Layer for Road Works for External Road - 3 |  | 2027-02-23 → 2027-03-20 (+25d) |  |
| CO-RD-PB-290 | Aggregate Base Course Layer for Road Works for External Road - 3 | 2027-02-21 → 2027-03-17 (+24d) | 2027-03-04 → 2027-03-29 (+25d) |  |
| 1 | **Bituminous Construction** | 2027-03-13 → 2027-04-03 (+21d) | 2027-04-07 → 2027-04-28 (+21d) |  |
| CO-RD-B-300 | Bituminous Base Courses Layers for Road Works for External Road - 3 | 2027-03-13 → 2027-04-03 (+21d) | 2027-03-25 → 2027-04-15 (+21d) |  |

| ID | Task | Start | Finish | Complete |
| --- | --- | --- | --- | --- |
| CON-RD-MR-290 | Preparation of Asphaltic Wearing Course Layer for Roads Network for External Road - 3 | 2027-03-27 → 2027-04-17 (+21d) | 2027-04-07 → 2027-04-28 (+21d) |  |
| LS | **Pavement Works** | 2027-04-03 → 2027-04-24 (+21d) | 2027-04-05 → 2027-04-26 (+21d) |  |
| CO-RD-PV-300 | Fixing of Curbstone for Sidewalks Pavement for External Road - 3 | 2027-04-03 → 2027-04-24 (+21d) | 2027-04-05 → 2027-04-26 (+21d) |  |
| CO-RD-PV-310 | Fixing of Interlock Tiles for Sidewalks Pavement for External Road - 3 | 2027-04-03 → 2027-04-24 (+21d) | 2027-04-05 → 2027-04-26 (+21d) |  |
| TS | **Traffic Signs Boards and Roads Marking** | 2027-04-08 → 2027-04-29 (+21d) | 2027-04-13 → 2027-05-04 (+21d) |  |
| CO-RD-F-RM-250 | Application of Road Marking Works For Road Works for External Road - 3 | 2027-04-08 → 2027-04-29 (+21d) | 2027-04-13 → 2027-05-04 (+21d) |  |
| CO-RD-F-TS-190 | Installation Works of Traffic Signs Boards For Road Works for External Road - 3 | 2027-04-08 → 2027-04-29 (+21d) | 2027-04-11 → 2027-05-02 (+21d) |  |
| GEN | **Superstructure Work** |  | 2027-05-31 → 2027-06-16 (+16d) |  |
| 4 | **Utility Buildings** |  | 2027-05-31 → 2027-06-16 (+16d) |  |
| 4 | **Water Pump Station** |  | 2027-05-26 → 2027-06-16 (+21d) |  |
| 1 | **SubStructure** |  | 2026-10-27 → 2026-11-08 (+12d) |  |
| CO-UB-PS-140 | pouring for Foundation for Water Pump station building | 2026-10-14 → 2026-10-01 A (-13d) | 2026-10-14 → 2026-10-03 A (-11d) | 0% → 100% |
| CO-UB-PS-150 | curing and deshuttering formwork Pump station building | 2026-10-15 → 2026-10-06 A (-9d) | 2026-10-22 → 2026-10-10 A (-12d) | 0% → 100% |
| CO-UB-PS-160 | Backfilling and compaction work for pump station | 2026-10-24 → 2026-11-04 (+11d) | 2026-10-27 → 2026-11-08 (+12d) |  |
| 2 | **Super structure** | 2026-10-28 → 2026-10-06 (-22d) |  |  |
| CO-UB-PS-170 | Formwork for Wall and columns for Water Pump station building | 2026-10-28 → 2026-10-06 A (-22d) | 2026-11-02 → 2026-10-08 A (-25d) | 0% → 100% |
| CO-UB-PS-180 | Steel fixing for Wall columns | 2026-11-03 → 2026-10-08 A (-26d) | 2026-11-07 → 2026-10-10 A (-28d) | 0% → 100% |
| CO-UB-PS-190 | pouring for Wall columns | 2026-11-08 → 2026-10-11 A (-28d) | 2026-11-08 → 2026-10-12 A (-27d) | 0% → 100% |
| 4 | **Mechanical work** | 2027-04-10 → 2027-05-01 (+21d) | 2027-05-26 → 2027-06-16 (+21d) |  |
| CO-UB-PS-340 | Executing HVAC System for Water Pump station building | 2027-04-10 → 2027-05-01 (+21d) | 2027-04-20 → 2027-05-11 (+21d) |  |
| CO-UB-PS-360 | Executing Fire fighting institution works(piping and wire installation) for Water Pump station building | 2027-04-21 → 2027-05-12 (+21d) | 2027-05-02 → 2027-05-29 (+27d) |  |
| CO-UB-PS-380 | Executing Plummbing works for Water Pump station building | 2027-05-03 → 2027-05-30 (+27d) | 2027-05-13 → 2027-06-09 (+27d) |  |
| CO-UB-PS-390 | Installation of pumps | 2027-05-20 → 2027-06-10 (+21d) | 2027-05-26 → 2027-06-16 (+21d) |  |
| 3 | **Sewage Lift Station** |  | 2027-04-21 → 2027-01-21 (-90d) |  |
| 1 | **Civil work** |  | 2027-04-18 → 2027-01-18 (-90d) |  |
| 1 | **Sup Structure** |  | 2027-02-08 → 2026-10-10 (-121d) |  |
| CO-UB-LS-240 | Formwork for Foundation for Sewage Lift Station |  | 2027-01-12 → 2026-10-03 A (-101d) | 80% → 100% |
| CO-UB-LS-250 | Steel fixing for Foundation for Sewage Lift Station |  | 2027-01-21 → 2026-10-06 A (-107d) | 80% → 100% |
| CO-UB-LS-260 | pouring for Foundationfor Sewage Lift Station |  | 2027-01-24 → 2026-10-08 A (-108d) | 80% → 100% |
| CO-UB-LS-270 | curing and deshuttering formwork for Sewage Lift Station |  | 2027-02-01 → 2026-10-10 A (-114d) | 80% → 100% |
| CO-UB-LS-280 | Backfilling and compaction work for Sewage Lift Station |  | 2027-02-08 → 2026-10-10 A (-121d) | 80% → 100% |
| 2 | **Super structure** | 2027-02-09 → 2026-09-30 (-132d) | 2027-04-18 → 2027-01-18 (-90d) |  |
| CO-UB-LS-290 | Formwork for Wall and columns for Sewage Lift Station | 2027-02-09 → 2026-09-30 A (-132d) | 2027-02-20 → 2026-10-04 A (-139d) | 0% → 100% |
| CO-UB-LS-300 | Steel fixing for Wall columns | 2027-02-21 → 2026-10-05 A (-139d) | 2027-03-02 → 2026-10-06 A (-147d) | 0% → 100% |
| CO-UB-LS-310 | pouring for Wall columns | 2027-03-03 → 2026-10-07 A (-147d) | 2027-03-03 → 2026-10-08 A (-146d) | 0% → 100% |
| CO-UB-LS-320 | curing and deshuttering formwork for Wall columns | 2027-03-04 → 2026-10-11 A (-144d) | 2027-03-15 → 2026-10-12 A (-154d) | 0% → 100% |
| CO-UB-LS-330 | Waterproofing for Walls columns | 2027-03-16 → 2026-10-12 A (-155d) | 2027-03-20 → 2026-10-13 A (-158d) | 0% → 100% |
| CO-UB-LS-340 | Formwork for pump roof | 2027-03-21 → 2026-10-13 A (-159d) | 2027-03-27 → 2026-10-15 A (-163d) | 0% → 100% |
| CO-UB-LS-350 | Steel fixing for pump roof | 2027-03-28 → 2026-10-17 A (-162d) | 2027-04-03 → 2026-10-18 A (-167d) | 0% → 100% |
| CO-UB-LS-360 | pouring for pump roof | 2027-04-04 → 2026-10-18 A (-168d) | 2027-04-04 → 2027-01-04 (-90d) | 0% → 90% |
| CO-UB-LS-370 | curing and deshuttering formwork for pump roof | 2027-04-05 → 2027-01-05 (-90d) | 2027-04-18 → 2027-01-18 (-90d) |  |
| 2 | **Architectural work** | 2027-04-19 → 2027-01-19 (-90d) | 2027-04-21 → 2027-01-21 (-90d) |  |
| CO-UB-LS-390 | Executing Plastering and Finishes Works for Sewage Lift Station | 2027-04-19 → 2027-01-19 (-90d) | 2027-04-21 → 2027-01-21 (-90d) |  |
| 1 | **Control Room** | 2026-11-29 → 2026-10-03 (-57d) | 2027-05-31 → 2027-05-08 (-23d) |  |
| 5 | **Civil Work** | 2026-11-29 → 2026-10-03 (-57d) | 2027-01-31 → 2027-01-13 (-18d) |  |
| CO-UB-CR-100 | Excavation Work For Control Room Foundation | 2026-11-29 → 2026-10-03 A (-57d) | 2026-12-06 → 2026-10-04 A (-63d) | 0% → 100% |
| CO-UB-CR-110 | Pouring for Plain Concrete | 2026-12-07 → 2026-10-05 A (-63d) | 2026-12-12 → 2026-10-11 A (-62d) | 0% → 100% |
| CO-UB-CR-120 | Pouring R.C Footing For Control Room | 2026-12-13 → 2026-10-13 A (-61d) | 2027-01-05 → 2026-10-17 A (-80d) | 0% → 100% |
| CO-UB-CR-130 | Pouring R.C Columns For Control Room | 2027-01-06 → 2026-12-20 (-17d) | 2027-01-19 → 2027-01-02 (-17d) |  |
| CO-UB-CR-140 | Pouring Beams and Slab For Control Room | 2027-01-20 → 2027-01-03 (-17d) | 2027-01-31 → 2027-01-13 (-18d) |  |
| 6 | **Finishing Work** | 2027-02-01 → 2027-01-14 (-18d) | 2027-05-31 → 2027-05-08 (-23d) |  |
| 1 | **Architictural work** | 2027-02-01 → 2027-01-14 (-18d) | 2027-03-24 → 2027-03-03 (-21d) |  |
| CO-UB-CR-150 | Brick Work For Control Room | 2027-02-01 → 2027-01-14 (-18d) | 2027-02-11 → 2027-01-25 (-17d) |  |
| CO-UB-CR-160 | Thermal & Moisture Protection Work for Control Room | 2027-02-13 → 2027-01-26 (-18d) | 2027-02-20 → 2027-02-02 (-18d) |  |
| CO-UB-CR-200 | Install For Curtian Wall and Windows and Doors | 2027-02-21 → 2027-02-03 (-18d) | 2027-02-28 → 2027-02-10 (-18d) |  |
| CO-UB-CR-240 | External Finshing Work (Walls and Floor) | 2027-03-01 → 2027-02-11 (-18d) | 2027-03-13 → 2027-02-20 (-21d) |  |
| CO-UB-CR-250 | Internal Finshing Work (Walls,Floor and Ceiling) | 2027-03-14 → 2027-02-21 (-21d) | 2027-03-24 → 2027-03-03 (-21d) |  |
| 3 | **Mechanical Work** | 2027-02-13 → 2027-01-26 (-18d) | 2027-05-10 → 2027-04-22 (-18d) |  |
| 3 | **HVAC System** | 2027-02-13 → 2027-01-26 (-18d) | 2027-05-10 → 2027-04-22 (-18d) |  |
| CO-UB-CR-170 | Install of Refrigerant Piping ( fabricated metal ducts with flanges complete with supports, vanes, dampers ) | 2027-02-13 → 2027-01-26 (-18d) | 2027-03-08 → 2027-02-18 (-18d) |  |
| CO-UB-CR-260 | Install of Mini split actual and Ducted split | 2027-03-25 → 2027-03-04 (-21d) | 2027-04-17 → 2027-03-30 (-18d) |  |
| CO-UB-CR-310 | Install of Air Grills 150mm x150mm and Air Diffuser 600mm x 600mm | 2027-04-18 → 2027-03-31 (-18d) | 2027-05-10 → 2027-04-22 (-18d) |  |
| 4 | **Fire Fitting System** | 2027-03-13 → 2027-02-20 (-21d) | 2027-03-31 → 2027-03-14 (-17d) |  |
| CO-UB-CR-180 | Installation & Testing of 2 hours Fire rated system for closing the openings between rooms with help of Rock wool | 2027-03-13 → 2027-02-20 (-21d) | 2027-03-23 → 2027-03-02 (-21d) |  |
| CO-UB-CR-270 | Install Fire Extinguishers | 2027-03-25 → 2027-03-04 (-21d) | 2027-03-31 → 2027-03-14 (-17d) |  |
| 1 | **Plumbing System** | 2027-03-25 → 2027-03-04 (-21d) | 2027-04-07 → 2027-03-21 (-17d) |  |
| CO-UB-CR-370 | Install of Sanitary Wares Including Relevant Pipes and Fittings | 2027-03-25 → 2027-03-04 (-21d) | 2027-04-07 → 2027-03-21 (-17d) |  |
| 4 | **Electrical Work** | 2027-03-25 → 2027-03-04 (-21d) | 2027-05-24 → 2027-05-01 (-23d) |  |
| 1 | **LV Power** | 2027-03-25 → 2027-03-04 (-21d) | 2027-05-13 → 2027-04-26 (-17d) |  |
| CO-UB-CR-190 | Install of Distribution board For Control Room | 2027-03-25 → 2027-03-04 (-21d) | 2027-04-05 → 2027-03-18 (-18d) |  |

| ID | Task | Start | Finish | Complete |
| --- | --- | --- | --- | --- |
| CO-UB-CR-220 | Install of Earting Cable for Control Room | 2027-04-06 → 2027-03-20 (-17d) | 2027-04-21 → 2027-04-04 (-17d) |  |
| CO-UB-CR-280 | Install of Socket outlet and LED Lighting | 2027-04-22 → 2027-04-05 (-17d) | 2027-05-13 → 2027-04-26 (-17d) |  |
| 3 | **Fire Detection And Alarm System** | 2027-04-08 → 2027-03-22 (-17d) | 2027-05-24 → 2027-05-01 (-23d) |  |
| CO-UB-CR-210 | Install of 2C x 1.5 Sqm FR Rated Armored - Cable For Loop Wiring | 2027-04-08 → 2027-03-22 (-17d) | 2027-04-12 → 2027-03-25 (-18d) |  |
| CO-UB-CR-230 | Install of Transmission Communication cable - Fiber Optics 12Core | 2027-04-13 → 2027-03-27 (-17d) | 2027-04-17 → 2027-03-30 (-18d) |  |
| CO-UB-CR-290 | Install of power supply system for fire alarm control panel | 2027-04-18 → 2027-03-31 (-18d) | 2027-04-21 → 2027-04-04 (-17d) |  |
| CO-UB-CR-300 | Install of Fire Alarm Control panel | 2027-04-22 → 2027-04-05 (-17d) | 2027-04-28 → 2027-04-11 (-17d) |  |
| CO-UB-CR-320 | Installation of the addressable manual call point with operation safety glass breaking | 2027-04-29 → 2027-04-12 (-17d) | 2027-05-02 → 2027-04-14 (-18d) |  |
| CO-UB-CR-330 | Install of the photoelectric heat & smoke detector | 2027-05-03 → 2027-04-15 (-18d) | 2027-05-08 → 2027-04-20 (-18d) |  |
| CO-UB-CR-340 | Install of Sounder With Beacon | 2027-05-09 → 2027-04-21 (-18d) | 2027-05-13 → 2027-04-26 (-17d) |  |
| CO-UB-CR-350 | Install of Addressable Control module | 2027-05-20 → 2027-04-27 (-23d) | 2027-05-24 → 2027-05-01 (-23d) |  |
| 2 | **Furnitures work** | 2027-05-25 → 2027-05-02 (-23d) | 2027-05-31 → 2027-05-08 (-23d) |  |
| CO-UB-CR-360 | Office Chairs,Tables and Stand | 2027-05-25 → 2027-05-02 (-23d) | 2027-05-31 → 2027-05-08 (-23d) |  |
| ML | **Softscape and Planting Works** | 2027-04-04 → 2027-04-24 (+20d) | 2027-05-13 → 2027-06-08 (+26d) |  |
| CO-LS-PL-160 | Planting Works: Planting including plants, forming planting beds, suitable soil, supports, and protection | 2027-04-04 → 2027-04-24 (+20d) | 2027-04-20 → 2027-05-10 (+20d) |  |
| CO-LS-SF-170 | Site Furnishings (Seating Bench,Stone Boulders and Gravel) | 2027-04-21 → 2027-05-11 (+20d) | 2027-05-13 → 2027-06-08 (+26d) |  |
| 6 | **Storm Drainage Ponds** | 2027-02-09 → 2026-10-01 (-131d) | 2027-04-10 → 2027-04-28 (+18d) |  |
| CO-SD-PO-100-P1 | Excavation & Filling Works - PART 1 for Storm Drainage Ponds | 2027-02-09 → 2026-10-01 A (-131d) | 2027-02-16 → 2027-03-07 (+19d) | 0% → 90% |
| CO-SD-PO-110-P1 | Finished Grouted Riprap - PART 1 for Storm Drainage Ponds | 2027-02-17 → 2027-03-01 A (+12d) | 2027-02-25 → 2027-03-20 (+23d) | 0% → 90% |
| CO-SD-PO-100-P2 | Excavation & Filling Works - PART 2 for Storm Drainage Ponds | 2027-02-27 → 2027-03-21 (+22d) | 2027-03-21 → 2027-04-08 (+18d) |  |
| CO-SD-PO-110-P2 | Finished Grouted Riprap - PART 2 for Storm Drainage Ponds | 2027-03-22 → 2027-04-10 (+19d) | 2027-04-10 → 2027-04-28 (+18d) |  |
| 1 | **Boundary Fence and Gaurd Room** |  | 2027-05-11 → 2027-06-06 (+26d) |  |
| 1 | **Gaurd Room Work** | 2027-03-22 → 2027-04-11 (+20d) | 2027-05-11 → 2027-06-06 (+26d) |  |
| 1 | **Civil Work** | 2027-03-22 → 2027-04-11 (+20d) | 2027-04-07 → 2027-04-27 (+20d) |  |
| A1000 | Excavation Work For Guard Room Foundation | 2027-03-22 → 2027-04-11 (+20d) | 2027-03-27 → 2027-04-15 (+19d) |  |
| A1010 | Pouring for Plain Concrete for Guard Room | 2027-03-28 → 2027-04-17 (+20d) | 2027-03-28 → 2027-04-17 (+20d) |  |
| A1020 | Pouring R.C Footing for Guard Room | 2027-03-29 → 2027-04-18 (+20d) | 2027-03-31 → 2027-04-20 (+20d) |  |
| A1030 | Pouring R.C Columns for Guard Room | 2027-04-01 → 2027-04-21 (+20d) | 2027-04-04 → 2027-04-24 (+20d) |  |
| A1040 | Pouring Beams and Slab for Guard Room | 2027-04-05 → 2027-04-25 (+20d) | 2027-04-07 → 2027-04-27 (+20d) |  |
| 2 | **Finishing Work** | 2027-04-08 → 2027-04-28 (+20d) | 2027-05-11 → 2027-06-06 (+26d) |  |
| 1 | **Architectural work** | 2027-04-08 → 2027-04-28 (+20d) | 2027-05-09 → 2027-06-03 (+25d) |  |
| A1050 | Brick Works for Architectural Works for Guard Rooms | 2027-04-08 → 2027-04-28 (+20d) | 2027-04-14 → 2027-05-04 (+20d) |  |
| A1060 | Thermal & Moisture Protection Work for Architectural Works for Guard Rooms | 2027-04-15 → 2027-05-05 (+20d) | 2027-04-20 → 2027-05-10 (+20d) |  |
| A1080 | External Finshing Work (Walls and Floor) for Architectural Works for Guard Rooms | 2027-04-27 → 2027-05-23 (+26d) | 2027-04-28 → 2027-05-24 (+26d) |  |
| A1090 | Internal Finshing Work (Walls,Floor and Ceiling) for Architectural Works for Guard Rooms | 2027-04-27 → 2027-05-23 (+26d) | 2027-05-03 → 2027-05-29 (+26d) |  |
| A1070 | Installation of Windows and Doors for Architectural Works for Guard Rooms | 2027-05-04 → 2027-05-30 (+26d) | 2027-05-09 → 2027-06-03 (+25d) |  |
| 3 | **Mechanical Work** | 2027-04-21 → 2027-05-11 (+20d) | 2027-04-29 → 2027-05-25 (+26d) |  |
| 1 | **Drainage System** | 2027-04-21 → 2027-05-11 (+20d) | 2027-04-29 → 2027-05-25 (+26d) |  |
| A1110 | Installation of Sewage Piping System complete with joints, angles, reducer etc. for Drainage System for Guard Rooms | 2027-04-21 → 2027-05-11 (+20d) | 2027-04-25 → 2027-05-20 (+25d) |  |
| A1120 | Installation of all Sanitary Ware for Drainage System for Guard Rooms | 2027-04-26 → 2027-05-22 (+26d) | 2027-04-29 → 2027-05-25 (+26d) |  |
| 2 | **Water Supply System** | 2027-04-21 → 2027-05-11 (+20d) | 2027-04-29 → 2027-05-25 (+26d) |  |
| A1140 | Installation of Water Piping System complete with joints, angles, reducer etc. for Water Supply System for Guard Rooms | 2027-04-21 → 2027-05-11 (+20d) | 2027-04-24 → 2027-05-13 (+19d) |  |
| A1180 | Installation oF Water Supply Wares (Water Heater, Faucets, Etc..) for Water Supply System for Guard Rooms | 2027-04-25 → 2027-05-20 (+25d) | 2027-04-26 → 2027-05-22 (+26d) |  |
| A1240 | Installation of water tanks for Water Supply System for Guard Rooms | 2027-04-29 → 2027-05-25 (+26d) | 2027-04-29 → 2027-05-25 (+26d) |  |
| 3 | **HVAC System** | 2027-04-21 → 2027-05-11 (+20d) | 2027-04-24 → 2027-05-13 (+19d) |  |
| A1200 | Installation of AC Piping for HVAC System for Guard Rooms | 2027-04-21 → 2027-05-11 (+20d) | 2027-04-22 → 2027-05-12 (+20d) |  |
| A1190 | Installation of AC Units for HVAC System for Guard Rooms | 2027-04-24 → 2027-05-13 (+19d) | 2027-04-24 → 2027-05-13 (+19d) |  |
| 4 | **Fire Fighting System** | 2027-04-21 → 2027-05-11 (+20d) | 2027-04-24 → 2027-05-13 (+19d) |  |
| A1220 | Installation & Testing of 2 hours Fire Fighting system for Fire Fighting System for Guard Rooms | 2027-04-21 → 2027-05-11 (+20d) | 2027-04-22 → 2027-05-12 (+20d) |  |
| A1230 | Installation of Fire Extinguishers for Fire Fighting System for Guard Rooms | 2027-04-24 → 2027-05-13 (+19d) | 2027-04-24 → 2027-05-13 (+19d) |  |
| 4 | **Electrical Work** | 2027-04-21 → 2027-05-11 (+20d) | 2027-05-03 → 2027-05-29 (+26d) |  |
| 1 | **LV Power** | 2027-04-21 → 2027-05-11 (+20d) | 2027-05-01 → 2027-05-26 (+25d) |  |
| A1250 | Installation of Conduits and Cables for LV System for Gaurd Rooms | 2027-04-21 → 2027-05-11 (+20d) | 2027-04-26 → 2027-05-22 (+26d) |  |
| A1260 | Install of Eletrical Finishes (DBs, Sockets and Lightings) and Termination for LV System for Gaurd Rooms | 2027-04-27 → 2027-05-23 (+26d) | 2027-05-01 → 2027-05-26 (+25d) |  |
| 3 | **Fire Detection And Alarm System** | 2027-04-21 → 2027-05-11 (+20d) | 2027-05-03 → 2027-05-29 (+26d) |  |
| A1340 | Installation of Conduits and Cables for Fire Alarm System for Gaurd Rooms | 2027-04-21 → 2027-05-11 (+20d) | 2027-04-26 → 2027-05-22 (+26d) |  |
| A1350 | Installation of Fire Alarm Devices (AMCP, SD,HD, Sounder and Panels) for Fire Alarm System for Gaurd Rooms | 2027-04-27 → 2027-05-23 (+26d) | 2027-05-03 → 2027-05-29 (+26d) |  |
| 2 | **Furniture work** | 2027-05-10 → 2027-06-05 (+26d) | 2027-05-11 → 2027-06-06 (+26d) |  |
| A1100 | Office Chairs,Tables and Stand | 2027-05-10 → 2027-06-05 (+26d) | 2027-05-11 → 2027-06-06 (+26d) |  |
| 3 | **Boundary Fence** |  | 2027-05-11 → 2027-05-26 (+15d) |  |
| 2 | **Boundary Fence - South** |  | 2027-04-03 → 2027-04-05 (+2d) |  |
| 1 | **Civil Work** |  | 2026-12-30 → 2027-01-02 (+3d) |  |
| CO-SU-FE-N-CI-130 | Pouring R.C Columns For Boundary Fence South |  | 2026-12-16 → 2026-12-20 (+4d) | 65% → 10% |
| CO-SU-FE-N-CI-140 | Pouring Beams For Boundary Fence South | 2026-12-17 → 2026-12-20 (+3d) | 2026-12-30 → 2027-01-02 (+3d) |  |
| 5 | **Finishing Work** | 2026-12-31 → 2026-10-13 (-79d) | 2027-04-03 → 2027-04-05 (+2d) |  |
| 4 | **Architictural work** | 2026-12-31 → 2026-10-13 (-79d) | 2027-03-06 → 2027-03-08 (+2d) |  |
| CO-SU-FE-N-AR-100 | Install Brick Work For Boundary Fence South | 2026-12-31 → 2026-10-13 A (-79d) | 2027-01-21 → 2027-01-24 (+3d) | 0% → 20% |
| CO-SU-FE-N-AR-110 | Insulation For Boundary Fence South | 2027-02-07 → 2027-02-09 (+2d) | 2027-02-23 → 2027-02-25 (+2d) |  |
| CO-SU-FE-N-AR-120 | Install all the Relevant Cladding and Finishes For Boundary Fence South | 2027-02-24 → 2027-02-27 (+3d) | 2027-03-06 → 2027-03-08 (+2d) |  |
| 3 | **Electrical Work** | 2027-01-23 → 2027-01-25 (+2d) | 2027-04-03 → 2027-04-05 (+2d) |  |

| ID | Task | Start | Finish | Complete | Other |
| --- | --- | --- | --- | --- | --- |
| CO-SU-FE-N-EL-240 | Installation of Conduits and Cables for Electricial Works For Boundary Fence South | 2027-01-23 → 2027-01-25 (+2d) | 2027-02-06 → 2027-02-08 (+2d) |  |  |
| CO-SU-FE-N-EL-250 | Install, fixings, testing of all electrical finishes and lightings for Electricial Works For Boundary Fence South | 2027-03-07 → 2027-03-13 (+6d) | 2027-04-03 → 2027-04-05 (+2d) |  |  |
| 1 | **Boundary Fence - West** |  | 2027-04-13 → 2027-04-15 (+2d) |  |  |
| 1 | **Civil Work** |  | 2027-01-18 → 2026-10-18 (-92d) |  |  |
| CO-SU-FE-N-CI-180 | Pouring R.C Columns For Boundary Fence West |  | 2027-01-04 → 2026-10-12 A (-84d) | 65% → 100% |  |
| CO-SU-FE-N-CI-190 | Pouring Beams For Boundary Fence West | 2027-01-05 → 2026-10-12 A (-85d) | 2027-01-18 → 2026-10-18 A (-92d) | 0% → 100% |  |
| 5 | **Finishing Work** | 2027-01-23 → 2026-10-01 (-114d) | 2027-04-13 → 2027-04-15 (+2d) |  |  |
| 4 | **Architictural work** | 2027-01-23 → 2026-10-01 (-114d) | 2027-03-27 → 2027-03-29 (+2d) |  |  |
| CO-SU-FE-N-AR-130 | Install Brick Work For Boundary Fence West | 2027-01-23 → 2026-10-01 A (-114d) | 2027-02-09 → 2027-02-04 (-5d) | 0% → 95% |  |
| CO-SU-FE-N-AR-140 | Insulation For Boundary Fence West | 2027-02-24 → 2026-10-13 A (-134d) | 2027-03-13 → 2027-03-15 (+2d) | 0% → 40% |  |
| CO-SU-FE-N-AR-150 | Install all the Relevant Cladding and Finishes For Boundary Fence West | 2027-03-14 → 2027-03-16 (+2d) | 2027-03-27 → 2027-03-29 (+2d) |  | resources Skilled Labor [96 h]; Unskilled Labor [96 h]; Supply and install 33mm thick Lexan cladding blue complete with necessary framings & accessories all as per manufacturer's & architectural drawing. [283.58]; Supply and install 50mm thick random cut stone cladding complete with 600mm x 50mm thick coping, necessary framings, slotted anchor connection, steel tube framing, aluminum angles all necessary fittings & accessories as per manufacturer's detail & archite [3981.34]; Supply and install External plastering to walls and columns min. 15mm thick with cement mortar of specified grade including galvanized mesh, corner beads, angle beads, CE bonds to rough and smooth plaster complete the work as per drawing & specification. [4477.61]; Supply and install 2 coats of weatherproof paint at walls including one prime coat and two coats and putty to give smooth Surface as a base for paint including fiberglass tape to joints and all other accessories as per manufacturers approved specification [4477.61]; Supply and install MODON Signage with Logo Type 1 [3.73]; Supply and install MODON Signage Type 2 [3.73]; Supply and install "Triangle Style" signage [11.19] → Skilled Labor [96 h]; Unskilled Labor [96 h]; Supply and install 33mm thick Lexan cladding blue complete with necessary framings & accessories all as per manufacturer's & architectural drawing. [283.58]; Supply and install 50mm thick random cut stone cladding complete with 600mm x 50mm thick coping, necessary framings, slotted anchor connection, steel tube framing, aluminum angles all necessary fittings & accessories as per manufacturer's detail & archite [2981.34]; Supply and install External plastering to walls and columns min. 15mm thick with cement mortar of specified grade including galvanized mesh, corner beads, angle beads, CE bonds to rough and smooth plaster complete the work as per drawing & specification. [4477.61]; Supply and install 2 coats of weatherproof paint at walls including one prime coat and two coats and putty to give smooth Surface as a base for paint including fiberglass tape to joints and all other accessories as per manufacturers approved specification [4477.61]; Supply and install MODON Signage with Logo Type 1 [3.73]; Supply and install MODON Signage Type 2 [3.73]; Supply and install "Triangle Style" signage [11.19] |
| 3 | **Electrical Work** | 2027-02-10 → 2027-02-09 (-1d) | 2027-04-13 → 2027-04-15 (+2d) |  |  |
| CO-SU-FE-N-EL-260 | Installation of Conduits and Cables for Electricial Works For Boundary Fence West | 2027-02-10 → 2027-02-09 (-1d) | 2027-02-18 → 2027-02-17 (-1d) |  |  |
| CO-SU-FE-N-EL-270 | Install, fixings, testing of all electrical finishes and lightings for Electricial Works For Boundary Fence West | 2027-04-04 → 2027-04-06 (+2d) | 2027-04-13 → 2027-04-15 (+2d) |  |  |
| 3 | **Boundary Fence - North** |  | 2027-04-10 → 2027-04-12 (+2d) |  |  |
| 1 | **Civil Work** |  | 2027-02-06 → 2027-01-16 (-21d) |  |  |
| CO-SU-FE-N-CI-230 | Pouring R.C Columns For Boundary Fence North |  | 2027-01-23 → 2026-10-12 A (-103d) | 65% → 100% |  |
| CO-SU-FE-N-CI-240 | Pouring Beams For Boundary Fence North | 2027-01-24 → 2027-01-03 (-21d) | 2027-02-06 → 2027-01-16 (-21d) |  |  |
| 5 | **Finishing Work** | 2027-02-10 → 2026-10-01 (-132d) | 2027-04-10 → 2027-04-12 (+2d) |  |  |
| 4 | **Architictural work** | 2027-02-10 → 2026-10-01 (-132d) | 2027-04-03 → 2027-04-05 (+2d) |  |  |
| CO-SU-FE-N-AR-160 | Install Brick Work For Boundary Fence North | 2027-02-10 → 2026-10-01 A (-132d) | 2027-02-25 → 2027-02-13 (-12d) | 0% → 95% |  |
| CO-SU-FE-N-AR-180 | Install all the Relevant Cladding and Finishes For Boundary Fence North | 2027-03-28 → 2026-10-11 A (-168d) | 2027-04-03 → 2027-04-05 (+2d) | 0% → 20% |  |
| CO-SU-FE-N-AR-170 | Insulation For Boundary Fence North | 2027-03-14 → 2027-03-16 (+2d) | 2027-03-25 → 2027-03-28 (+3d) |  | resources Skilled Labor [264 h]; Unskilled Labor [264 h]; Two Layers of Bituminous Coating [12531.8]; 20x20 Approved Polysulfide Joint Sealant [115.67]; 2 perpendicular layers of cold bitumen coats [22.39]; 2 layer of 4mm HDPE membrane, 2 perpendicular layers cold bitumen coats [22.39]; 1 layer EPOXY Paint 300 micron [22.39]; Membrane fully bonded to prime deck and upstand [22.39]; Geotextile Filter membrane uv resistance [22.39]; 85mm thick thermal insulation [22.39]; 1.5mm thick epdm waterproofing membrane [22.39] → Skilled Labor [264 h]; Unskilled Labor [264 h]; Two Layers of Bituminous Coating; 20x20 Approved Polysulfide Joint Sealant [115.67]; 2 perpendicular layers of cold bitumen coats [22.39]; 2 layer of 4mm HDPE membrane, 2 perpendicular layers cold bitumen coats [22.39]; 1 layer EPOXY Paint 300 micron [22.39]; Membrane fully bonded to prime deck and upstand [22.39]; Geotextile Filter membrane uv resistance [22.39]; 85mm thick thermal insulation [22.39]; 1.5mm thick epdm waterproofing membrane [22.39] |
| 3 | **Electrical Work** | 2027-02-27 → 2027-02-18 (-9d) | 2027-04-10 → 2027-04-12 (+2d) |  |  |
| CO-SU-FE-N-EL-280 | Installation of Conduits and Cables for Electricial Works For Boundary Fence North | 2027-02-27 → 2027-02-18 (-9d) | 2027-03-06 → 2027-02-25 (-9d) |  |  |
| CO-SU-FE-N-EL-290 | Install, fixings, testing of all electrical finishes and lightings for Electricial Works For Boundary Fence North | 2027-04-04 → 2027-04-06 (+2d) | 2027-04-10 → 2027-04-12 (+2d) |  |  |
| 4 | **Boundary Fence - East** | 2026-09-26 → 2026-09-06 (-20d) | 2027-05-11 → 2027-05-26 (+15d) |  |  |
| 1 | **Civil Work** | 2026-09-26 → 2026-09-06 (-20d) | 2027-02-22 → 2027-01-27 (-26d) |  |  |
| CO-SU-FE-N-CI-260 | Pouring for Plain Concrete For Boundary Fence East | 2027-01-06 A → 2026-09-06 A (-122d) | 2026-12-13 → 2026-09-20 A (-84d) | 75% → 100% |  |
| CO-SU-FE-N-CI-270 | Pouring R.C Footing For Boundary Fence East | 2027-01-21 A → 2026-09-21 A (-122d) | 2026-12-19 → 2026-10-12 A (-68d) | 75% → 100% |  |
| CO-SU-FE-N-CI-280 | Pouring R.C Columns For Boundary Fence East |  | 2027-02-10 → 2027-01-09 (-32d) |  |  |
| CO-SU-FE-N-CI-250 | Excavation Work For Boundary Fence East |  | 2026-12-07 → 2026-12-19 A (+12d) | 75% → 100% |  |
| CO-SU-FE-N-CI-290 | Pouring Beams For Boundary Fence East | 2027-02-11 → 2027-01-17 (-25d) | 2027-02-22 → 2027-01-27 (-26d) |  |  |
| 5 | **Finishing Work** | 2027-03-23 → 2026-10-01 (-173d) | 2027-05-11 → 2027-05-26 (+15d) |  |  |
| 4 | **Architictural work** | 2027-03-23 → 2026-10-01 (-173d) | 2027-05-05 → 2027-05-20 (+15d) |  |  |
| CO-SU-FE-N-AR-200 | Insulation For Boundary Fence East | 2027-04-17 → 2026-10-01 A (-198d) | 2027-04-25 → 2026-10-12 A (-195d) | 0% → 100% |  |
| CO-SU-FE-N-AR-190 | Install Brick Work For Boundary Fence East | 2027-03-23 → 2026-10-08 A (-166d) | 2027-04-04 → 2027-04-22 (+18d) | 0% → 40% |  |
| CO-SU-FE-N-AR-210 | Install all the Relevant Cladding and Finishes For Boundary Fence East | 2027-04-26 → 2027-05-05 (+9d) | 2027-05-05 → 2027-05-20 (+15d) |  |  |
| 3 | **Electrical Work** | 2027-04-05 → 2027-04-24 (+19d) | 2027-05-11 → 2027-05-26 (+15d) |  |  |
| CO-SU-FE-N-EL-300 | Installation of Conduits and Cables for Electricial Works For Boundary Fence East | 2027-04-05 → 2027-04-24 (+19d) | 2027-04-15 → 2027-05-04 (+19d) |  |  |
| CO-SU-FE-N-EL-310 | Install, fixings, testing of all electrical finishes and lightings for Electricial Works For Boundary Fence East | 2027-05-06 → 2027-05-22 (+16d) | 2027-05-11 → 2027-05-26 (+15d) |  |  |
| TC | **Testing and Comissioning** | 2027-05-12 → 2027-06-07 (+26d) | 2027-06-14 → 2027-07-05 (+21d) |  |  |
| INF | **Infrastructure Networks** | 2027-05-23 → 2027-06-12 (+20d) | 2027-06-09 → 2027-06-30 (+21d) |  |  |
| LV | **Low Voltage Network** | 2027-05-27 → 2027-06-17 (+21d) | 2027-06-09 → 2027-06-30 (+21d) |  |  |
| TC-LV-100 | Testing and Commissioning of Low Voltage Network | 2027-05-27 → 2027-06-17 (+21d) | 2027-06-09 → 2027-06-30 (+21d) |  |  |
| PW1 | **Irrigation Network** | 2027-05-27 → 2027-06-17 (+21d) | 2027-06-09 → 2027-06-30 (+21d) |  |  |
| T/C-IR | Testing and Commissioning of Irrigation Network | 2027-05-27 → 2027-06-17 (+21d) | 2027-06-09 → 2027-06-30 (+21d) |  |  |
| PW11 | **TSE Network** | 2027-05-27 → 2027-06-17 (+21d) | 2027-06-09 → 2027-06-30 (+21d) |  |  |
| T/C-TSE-10 | Testing and Commissioning of TSE Network | 2027-05-27 → 2027-06-17 (+21d) | 2027-06-09 → 2027-06-30 (+21d) |  |  |
| PW | **Potable Water Network** | 2027-05-27 → 2027-06-17 (+21d) | 2027-06-09 → 2027-06-30 (+21d) |  |  |
| T/C-PW | Testing and Commissioning of Potable Water Network | 2027-05-27 → 2027-06-17 (+21d) | 2027-06-09 → 2027-06-30 (+21d) |  |  |
| SW | **Sewage Network** | 2027-05-27 → 2027-06-17 (+21d) | 2027-06-09 → 2027-06-30 (+21d) |  |  |
| T/C-SW | Testing and Commissioning of Sewage Network | 2027-05-27 → 2027-06-17 (+21d) | 2027-06-09 → 2027-06-30 (+21d) |  |  |
| SD | **Storm Drainage Network** | 2027-05-27 → 2027-06-17 (+21d) | 2027-06-09 → 2027-06-30 (+21d) |  |  |
| T/C-DPO | Testing and Commissioning of Storm Drainage Ponds | 2027-05-27 → 2027-06-17 (+21d) | 2027-06-09 → 2027-06-30 (+21d) |  |  |
| T/C-SD | Testing and Commissioning of Storm Drainage Ponds and Storm Drainage Network | 2027-05-27 → 2027-06-17 (+21d) | 2027-06-09 → 2027-06-30 (+21d) |  |  |
| SL | **Street Lighting Network** | 2027-05-23 → 2027-06-12 (+20d) | 2027-06-05 → 2027-06-24 (+19d) |  |  |
| T/C-SL | Testing and Commissioning of Street Lighting Network | 2027-05-23 → 2027-06-12 (+20d) | 2027-06-05 → 2027-06-24 (+19d) |  |  |
| TE | **Telecom and Light Current Network** | 2027-05-23 → 2027-06-12 (+20d) | 2027-06-05 → 2027-06-24 (+19d) |  |  |
| T/C-TE | Testing and Commissioning of Telecom and Light Current Networks | 2027-05-23 → 2027-06-12 (+20d) | 2027-06-05 → 2027-06-24 (+19d) |  |  |
| MV | **Medium Voltage Network** | 2027-05-23 → 2027-06-12 (+20d) | 2027-06-05 → 2027-06-24 (+19d) |  |  |
| T/C-MV | Testing and Commissioning of Medium Voltage Network | 2027-05-23 → 2027-06-12 (+20d) | 2027-06-05 → 2027-06-24 (+19d) |  |  |
| RD | **Road Works** | 2027-05-23 → 2027-06-12 (+20d) | 2027-06-05 → 2027-06-24 (+19d) |  |  |
| T/C-RD | Testing and Commissioning of Road Works | 2027-05-23 → 2027-06-12 (+20d) | 2027-06-05 → 2027-06-24 (+19d) |  |  |
| 1 | **Utility Buildings** | 2027-05-12 → 2027-06-07 (+26d) | 2027-06-14 → 2027-07-05 (+21d) |  |  |
| T/C-CTV | Testing and Commissioning of Guard Room and Boundary Fence | 2027-05-12 → 2027-06-07 (+26d) | 2027-06-05 → 2027-06-24 (+19d) |  |  |
| T/C-CTV20 | Testing and Commissioning of Softscape And Planting | 2027-05-20 → 2027-06-09 (+20d) | 2027-06-07 → 2027-06-27 (+20d) |  |  |
| T/C-CTV10 | Testing and Commissioning of Utility Buildings | 2027-05-27 → 2027-06-17 (+21d) | 2027-06-14 → 2027-07-05 (+21d) |  |  |
| 1 | **Handing over and close out** | 2027-05-23 → 2027-06-12 (+20d) | 2027-06-17 → 2027-07-08 (+21d) |  |  |
| 2 | **As-Built** | 2027-05-23 → 2027-06-12 (+20d) | 2027-06-17 → 2027-07-08 (+21d) |  |  |

| ID | Task | Start | Finish |
| --- | --- | --- | --- |
| HO-140 | Submission As-Built Drawing For Roads Network | 2027-05-23 → 2027-06-12 (+20d) | 2027-06-02 → 2027-06-22 (+20d) |
| HO-150 | Submission As-Built Drawing For Street Lighting Network | 2027-05-23 → 2027-06-12 (+20d) | 2027-06-02 → 2027-06-22 (+20d) |
| HO-160 | Submission As-Built Drawing For Telecom and Light Current Networks | 2027-05-23 → 2027-06-12 (+20d) | 2027-06-02 → 2027-06-22 (+20d) |
| HO-100 | Submission As-Built Drawing For Sewage Network | 2027-05-27 → 2027-06-17 (+21d) | 2027-06-07 → 2027-06-28 (+21d) |
| HO-130 | Submission As-Built Drawing For Pond | 2027-05-27 → 2027-06-17 (+21d) | 2027-06-07 → 2027-06-28 (+21d) |
| HO-180 | Submission As-Built Drawing For Irrigation Network | 2027-05-27 → 2027-06-17 (+21d) | 2027-06-07 → 2027-06-28 (+21d) |
| HO-200 | Submission As-Built Drawing For Storm Network | 2027-05-27 → 2027-06-17 (+21d) | 2027-06-07 → 2027-06-28 (+21d) |
| HO-210 | Submission As-Built Drawing For Utility Buildings | 2027-06-06 → 2027-06-27 (+21d) | 2027-06-14 → 2027-07-05 (+21d) |
| HO-170 | Submission As-Built Drawing For Medium Voltage Network | 2027-06-10 → 2027-07-01 (+21d) | 2027-06-17 → 2027-07-08 (+21d) |
| HO-190 | As-Built Drawing For Potable Water Network | 2027-06-10 → 2027-07-01 (+21d) | 2027-06-17 → 2027-07-08 (+21d) |
| 1 | **De-Mobilization Works** | 2027-05-25 → 2027-06-14 (+20d) | 2027-06-14 → 2027-07-04 (+20d) |
| HO-230 | Remove Temporary Car Shades | 2027-05-25 → 2027-06-14 (+20d) | 2027-06-05 → 2027-06-24 (+19d) |
| HO-220 | Removing Portable Caravan | 2027-05-29 → 2027-06-17 (+19d) | 2027-06-05 → 2027-06-24 (+19d) |
| HO-120 | Remove material stock & Storage area | 2027-06-06 → 2027-06-26 (+20d) | 2027-06-14 → 2027-07-04 (+20d) |
| 3 | **Handing Over** | 2027-05-27 → 2027-06-16 (+20d) | 2027-06-17 → 2027-07-08 (+21d) |
| HO-240 | Final Walkthrough and Inspection | 2027-05-27 → 2027-06-16 (+20d) | 2027-06-05 → 2027-06-24 (+19d) |
| HO-250 | Review B.O.Q Qty. to ensure compliance with the actual status | 2027-05-27 → 2027-06-16 (+20d) | 2027-06-05 → 2027-06-24 (+19d) |
| HO-260 | Review FIR Approval to ensure compliance with the actual status | 2027-05-27 → 2027-06-16 (+20d) | 2027-06-05 → 2027-06-24 (+19d) |
| HO-270 | Review the sample drawing to ensure compliance with the actual status | 2027-05-27 → 2027-06-16 (+20d) | 2027-06-05 → 2027-06-24 (+19d) |
| HO-280 | Punch List Completion | 2027-06-06 → 2027-06-26 (+20d) | 2027-06-14 → 2027-07-04 (+20d) |
| HO-110 | Final Testing Work | 2027-06-10 → 2027-07-01 (+21d) | 2027-06-17 → 2027-07-08 (+21d) |

## Version 4 (data date 2026-10-26, saved 2026-11-01, file DHRT-01-001-BL00.R01-42.xer)

Note of the change: Renumber project folders 01–23 in order (after removing projects 12 and 25)

Last finish 2027-07-08 → 2027-07-15 (+7d). Complete tasks 301 → 302.

Changed:

| ID | Task | Start | Finish |
| --- | --- | --- | --- |
| MS | **Key Milestones** |  | 2027-07-08 → 2027-07-15 (+7d) |
| CM | **Contractual Milestones** |  | 2027-07-08 → 2027-07-15 (+7d) |
| MS-CF-ENG | Completion of Submitting and Approval of Shopdrawing and Materials | 2026-11-15 → 2026-11-22 (+7d) | 2026-11-15 → 2026-11-22 (+7d) |
| MS-CF-SW | Completion of Construction Works for Sewage Network | 2027-02-25 → 2027-03-04 (+7d) | 2027-02-25 → 2027-03-04 (+7d) |
| MS-CF-MV | Completion of Construction Works for Medium Voltage Network | 2027-04-10 → 2027-04-17 (+7d) | 2027-04-10 → 2027-04-17 (+7d) |
| MS-MO-20 | Completion of Storm Drainage Ponds | 2027-04-28 → 2027-05-05 (+7d) | 2027-04-28 → 2027-05-05 (+7d) |
| MS-CF-SD | Completion of Construction Works for Storm Drainage Network | 2027-05-04 → 2027-05-11 (+7d) | 2027-05-04 → 2027-05-11 (+7d) |
| MS-CF-SL | Completion of Construction Works for Street Lighting Network | 2027-05-04 → 2027-05-11 (+7d) | 2027-05-04 → 2027-05-11 (+7d) |
| MS-CF-IR | Completion of Construction Works for Irrigation Network | 2027-05-05 → 2027-05-12 (+7d) | 2027-05-05 → 2027-05-12 (+7d) |
| MS-CF-LO | Completion of Construction Works for Low Voltage Network | 2027-05-05 → 2027-05-12 (+7d) | 2027-05-05 → 2027-05-12 (+7d) |
| MS-CF-PW | Completion of Construction Works for Potable Water Network | 2027-05-05 → 2027-05-12 (+7d) | 2027-05-05 → 2027-05-12 (+7d) |
| MS-CF-RD | Completion of Construction Works for Road Works | 2027-05-05 → 2027-05-12 (+7d) | 2027-05-05 → 2027-05-12 (+7d) |
| MS-CF-TE | Completion of Construction Works for Telecom and Light Current Networks | 2027-05-05 → 2027-05-12 (+7d) | 2027-05-05 → 2027-05-12 (+7d) |
| MS-CF-TSE | Completion of Construction Works for Treated Sewage Effluent Network | 2027-05-29 → 2027-06-05 (+7d) | 2027-05-29 → 2027-06-05 (+7d) |
| MS-MO-60 | Completion of Irrigation and Potable Tank | 2027-06-13 → 2027-06-20 (+7d) | 2027-06-13 → 2027-06-20 (+7d) |
| MS-MO-10 | Completion of Sewage Pump Station | 2027-06-16 → 2027-06-23 (+7d) | 2027-06-16 → 2027-06-23 (+7d) |
| MS-MO-50 | Completion of Water Pump Station | 2027-06-16 → 2027-06-23 (+7d) | 2027-06-16 → 2027-06-23 (+7d) |
| MS-MO-40 | Completion of Control Room | 2027-07-05 → 2027-07-12 (+7d) | 2027-07-05 → 2027-07-12 (+7d) |
| MS-CF-PF | Project Completion Date | 2027-07-08 → 2027-07-15 (+7d) | 2027-07-08 → 2027-07-15 (+7d) |
| CM1 | **Control Milestones** |  | 2026-10-19 → 2026-10-26 (+7d) |
| 2 | **The Employer** |  | 2026-10-19 → 2026-10-26 (+7d) |
| MS-MM-120 | Receipt of Advance Payment for the Project From The Employer | 2026-10-19 → 2026-10-26 (+7d) | 2026-10-19 → 2026-10-26 (+7d) |
| ENG | **Engineering Works** |  | 2026-11-15 → 2026-11-22 (+7d) |
| SD11 | **Material Submittals and Approvals** |  | 2026-11-15 → 2026-11-22 (+7d) |
| 1 | **Long Lead Time Items** | 2026-10-19 → 2026-10-26 (+7d) | 2026-11-15 → 2026-11-22 (+7d) |
| 2 | **Superstructure Works** | 2026-10-19 → 2026-10-26 (+7d) | 2026-11-15 → 2026-11-22 (+7d) |
| SL | **Sewage Pump Stations** | 2026-10-19 → 2026-10-26 (+7d) | 2026-11-01 → 2026-11-08 (+7d) |
| 1 | **Submission of Material** | 2026-10-19 → 2026-10-26 (+7d) | 2026-10-25 → 2026-11-01 (+7d) |
| ENG-MT-SPS-MC-S-100 | Material Submittal for Electromechanical Works for Pump Station | 2026-10-19 → 2026-10-26 (+7d) | 2026-10-25 → 2026-11-01 (+7d) |
| 2 | **Approval of Material** | 2026-10-26 → 2026-11-02 (+7d) | 2026-11-01 → 2026-11-08 (+7d) |
| ENG-MT-SPS-MC-A-110 | Material Approval for Electromechanical Works for Pump Station | 2026-10-26 → 2026-11-02 (+7d) | 2026-11-01 → 2026-11-08 (+7d) |
| SL1 | **Storage Tank (TSE)** | 2026-10-19 → 2026-10-26 (+7d) | 2026-11-15 → 2026-11-22 (+7d) |
| 1 | **Submission of Material** | 2026-10-19 → 2026-10-26 (+7d) | 2026-11-01 → 2026-11-08 (+7d) |
| ENG-MT-TSE-MC-S-110 | Material Submittal for Electromechanical Works for Storage Tank (TSE) | 2026-10-19 → 2026-10-26 (+7d) | 2026-11-01 → 2026-11-08 (+7d) |
| 2 | **Approval of Material** | 2026-11-02 → 2026-11-09 (+7d) | 2026-11-15 → 2026-11-22 (+7d) |
| ENG-MT-TSE-MC-A-120 | Material Approval for Electromechanical Works for Storage Tank (TSE) | 2026-11-02 → 2026-11-09 (+7d) | 2026-11-15 → 2026-11-22 (+7d) |
| PROC | **Procurement Cycle** |  | 2027-06-13 → 2027-06-20 (+7d) |
| NLL | **Short Lead Time Items** |  | 2027-04-25 → 2027-05-02 (+7d) |
| INF | **Infrastructure Networks** |  | 2027-04-25 → 2027-05-02 (+7d) |
| SD | **Storm Drainage Network** |  | 2027-02-27 → 2027-03-06 (+7d) |
| PO | **Issuance of Purchase Orders** |  | 2026-11-23 → 2026-11-30 (+7d) |
| 1 | **Main Line Sections** |  | 2026-10-20 → 2026-10-27 (+7d) |
| PRO-SD-PO-100 | Issuance of Purchase Order for Manholes of Storm Drainage Network | 2026-10-19 → 2026-10-26 (+7d) | 2026-10-20 → 2026-10-27 (+7d) |
| 2 | **Catch Basin Sections** | 2026-10-21 → 2026-10-28 (+7d) | 2026-11-02 → 2026-11-09 (+7d) |
| PRO-SD-PO-130 | Issuance of Purchase Order for Catch Basins of Storm Drainage Network | 2026-10-21 → 2026-10-28 (+7d) | 2026-10-26 → 2026-11-02 (+7d) |
| PRO-SD-PO-150 | Issuance of Purchase Order for Catch Basin Pipes of Storm Drainage Network | 2026-10-27 → 2026-11-03 (+7d) | 2026-11-02 → 2026-11-09 (+7d) |
| 3 | **Testing and Finishes** | 2026-11-03 → 2026-11-10 (+7d) | 2026-11-16 → 2026-11-23 (+7d) |
| PRO-SD-PO-120 | Issuance of Purchase Order for Manhole Covers of Storm Drainage Network | 2026-11-03 → 2026-11-10 (+7d) | 2026-11-09 → 2026-11-16 (+7d) |
| PRO-SD-PO-140 | Issuance of Purchase Order for Catch Basin Covers of Storm Drainage Network | 2026-11-10 → 2026-11-17 (+7d) | 2026-11-16 → 2026-11-23 (+7d) |
| TE1 | **Storm Drainage Ponds** | 2026-11-17 → 2026-11-24 (+7d) | 2026-11-23 → 2026-11-30 (+7d) |
| PRO-DPO-CV-PO-10 | Issuance of Purchase Order for Materials of Storm Drainage Ponds | 2026-11-17 → 2026-11-24 (+7d) | 2026-11-23 → 2026-11-30 (+7d) |
| MF | **Manufacturing of Material** |  | 2027-02-06 → 2027-02-13 (+7d) |
| 1 | **Main Line Sections** |  | 2026-10-29 → 2026-11-05 (+7d) |
| PRO-SD-MF-100 | Manufacturing of Materials for Manholes of Storm Drainage Network | 2026-10-21 → 2026-10-28 (+7d) | 2026-10-29 → 2026-11-05 (+7d) |
| 2 | **Catch Basin Sections** | 2026-10-27 → 2026-11-03 (+7d) | 2026-12-01 → 2026-12-08 (+7d) |
| PRO-SD-MF-130 | Manufacturing of Materials for Catch Basins of Storm Drainage Network | 2026-10-27 → 2026-11-03 (+7d) | 2026-11-24 → 2026-12-01 (+7d) |
| PRO-SD-MF-150 | Manufacturing of Materials for Catch Basin Pipes of Storm Drainage Network | 2026-11-03 → 2026-11-10 (+7d) | 2026-12-01 → 2026-12-08 (+7d) |
| 3 | **Testing and Finishes** | 2026-12-02 → 2026-12-09 (+7d) | 2027-01-28 → 2027-02-04 (+7d) |
| PRO-SD-MF-120 | Manufacturing of Materials for Manhole Covers of Storm Drainage Network | 2026-12-02 → 2026-12-09 (+7d) | 2026-12-24 → 2026-12-31 (+7d) |
| PRO-SD-MF-140 | Manufacturing of Materials for Catch Basin Covers of Storm Drainage Network | 2026-12-26 → 2027-01-02 (+7d) | 2027-01-28 → 2027-02-04 (+7d) |
| TE | **Storm Drainage Ponds** | 2026-11-24 → 2026-12-01 (+7d) | 2027-02-06 → 2027-02-13 (+7d) |
| PRO-DPO-CV-MF-10 | Manufacturing of Materials of Storm Drainage Ponds | 2026-11-24 → 2026-12-01 (+7d) | 2027-02-06 → 2027-02-13 (+7d) |
| 1DL | **1st Material Delivery & Site Inspection** |  | 2027-02-10 → 2027-02-17 (+7d) |
| 1 | **Main Line Sections** |  | 2026-11-03 → 2026-11-10 (+7d) |
| PRO-SD-1DL-100 | 1ST Material Delivery for Manholes of Storm Drainage Network | 2026-10-31 → 2026-11-07 (+7d) | 2026-11-03 → 2026-11-10 (+7d) |
| 2 | **Catch Basin Sections** | 2026-11-25 → 2026-12-02 (+7d) | 2026-12-06 → 2026-12-13 (+7d) |
| PRO-SD-1DL-130 | 1ST Material Delivery for Catch Basins of Storm Drainage Network | 2026-11-25 → 2026-12-02 (+7d) | 2026-11-29 → 2026-12-06 (+7d) |
| PRO-SD-1DL-120 | 1ST Material Delivery for Catch Basin Pipes of Storm Drainage Network | 2026-12-02 → 2026-12-09 (+7d) | 2026-12-06 → 2026-12-13 (+7d) |
| 3 | **Testing and Finishes** | 2026-12-26 → 2027-01-02 (+7d) | 2027-02-02 → 2027-02-09 (+7d) |
| PRO-SD-1DL-140 | 1ST Material Delivery for Manholes Covers of Storm Drainage Network | 2026-12-26 → 2027-01-02 (+7d) | 2026-12-29 → 2027-01-05 (+7d) |

| ID | Task | Start | Finish |
| --- | --- | --- | --- |
| PRO-SD-1DL-150 | 1ST Material Delivery for Catch Basin Covers of Storm Drainage Network | 2027-01-30 → 2027-02-06 (+7d) | 2027-02-02 → 2027-02-09 (+7d) |
| TE2 | **Storm Drainage Ponds** | 2027-02-07 → 2027-02-14 (+7d) | 2027-02-10 → 2027-02-17 (+7d) |
| PRO-DPO-CV-1DL-10 | 1ST Material Delivery for Materials of Drainage Ponds | 2027-02-07 → 2027-02-14 (+7d) | 2027-02-10 → 2027-02-17 (+7d) |
| DL | **Material Delivery & Site Inspection** |  | 2027-02-27 → 2027-03-06 (+7d) |
| 1 | **Main Line Sections** |  | 2026-12-02 → 2026-12-09 (+7d) |
| PRO-R25-SD-DL-120 | Material Delivery & Site Inspection of Main Line Pipes of Storm Drainage Network |  | 2026-12-02 → 2026-12-09 (+7d) |
| PRO-R25-SD-DL-100 | Material Delivery & Site Inspection of Manholes of Storm Drainage Network | 2026-11-04 → 2026-11-11 (+7d) | 2026-11-15 → 2026-11-22 (+7d) |
| 2 | **Catch Basin Sections** | 2026-11-30 → 2026-12-07 (+7d) | 2026-12-16 → 2026-12-23 (+7d) |
| PRO-R25-SD-DL-130 | Material Delivery & Site Inspection of Catch Basins for Storm Drainage Network | 2026-11-30 → 2026-12-07 (+7d) | 2026-12-08 → 2026-12-15 (+7d) |
| PRO-R25-SD-DL-110 | Material Delivery & Site Inspection of Catch Basin Pipes for Storm Drainage Network | 2026-12-09 → 2026-12-16 (+7d) | 2026-12-16 → 2026-12-23 (+7d) |
| 3 | **Testing and Finishes** | 2026-12-30 → 2027-01-06 (+7d) | 2027-02-18 → 2027-02-25 (+7d) |
| PRO-R25-SD-DL-140 | Material Delivery & Site Inspection of Manholes Covers for Storm Drainage Network | 2026-12-30 → 2027-01-06 (+7d) | 2027-01-21 → 2027-01-28 (+7d) |
| PRO-R25-SD-DL-150 | Material Delivery & Site Inspection of Catch Basin Covers for Storm Drainage Network | 2027-02-03 → 2027-02-10 (+7d) | 2027-02-18 → 2027-02-25 (+7d) |
| TE3 | **Storm Drainage Ponds** | 2027-02-11 → 2027-02-18 (+7d) | 2027-02-27 → 2027-03-06 (+7d) |
| PRO-DPO-CV-DL-10 | Material Delivery & Site Inspection for Materials of Storm Drainage Ponds | 2027-02-11 → 2027-02-18 (+7d) | 2027-02-27 → 2027-03-06 (+7d) |
| SW | **Sewage Network** | 2026-10-19 → 2026-10-26 (+7d) | 2026-12-05 → 2026-12-12 (+7d) |
| PO | **Issuance of Purchase Orders** | 2026-10-19 → 2026-10-26 (+7d) | 2026-11-11 → 2026-11-18 (+7d) |
| 1 | **Main Line Sections** | 2026-10-19 → 2026-10-26 (+7d) | 2026-11-03 → 2026-11-10 (+7d) |
| PRO-SW-PO-100 | Issuance of Purchase Order for Main Line Pipes of Sewage Network | 2026-10-19 → 2026-10-26 (+7d) | 2026-10-26 → 2026-11-02 (+7d) |
| PRO-SW-PO-110 | Issuance of Purchase Order for Manhole of Sewage Network | 2026-10-27 → 2026-11-03 (+7d) | 2026-11-03 → 2026-11-10 (+7d) |
| 3 | **Testing and Finishes** | 2026-11-04 → 2026-11-11 (+7d) | 2026-11-11 → 2026-11-18 (+7d) |
| PRO-SW-PO-120 | Issuance of Purchase Order for Manhole Covers of Sewage Network | 2026-11-04 → 2026-11-11 (+7d) | 2026-11-11 → 2026-11-18 (+7d) |
| MF | **Manufacturing of Material** | 2026-10-27 → 2026-11-03 (+7d) | 2026-11-18 → 2026-11-25 (+7d) |
| 1 | **Main Line Sections** | 2026-10-27 → 2026-11-03 (+7d) | 2026-11-15 → 2026-11-22 (+7d) |
| PRO-SW-MF-100 | Manufacturing of Main Line Pipes for Sewage Network | 2026-10-27 → 2026-11-03 (+7d) | 2026-11-07 → 2026-11-14 (+7d) |
| PRO-SW-MF-110 | Manufacturing of Manholes for Sewage Network | 2026-11-04 → 2026-11-11 (+7d) | 2026-11-15 → 2026-11-22 (+7d) |
| 3 | **Testing and Finishes** | 2026-11-12 → 2026-11-19 (+7d) | 2026-11-18 → 2026-11-25 (+7d) |
| PRO-SW-MF-120 | Manufacturing of Manhole Covers for Sewage Network | 2026-11-12 → 2026-11-19 (+7d) | 2026-11-18 → 2026-11-25 (+7d) |
| 1DL | **1st Material Delivery & Site Inspection** | 2026-11-08 → 2026-11-15 (+7d) | 2026-11-25 → 2026-12-02 (+7d) |
| 1 | **Main Line Sections** | 2026-11-08 → 2026-11-15 (+7d) | 2026-11-23 → 2026-11-30 (+7d) |
| PRO-SW-1DL-100 | 1ST Material Delivery for Main Line Pipes of Sewage Network | 2026-11-08 → 2026-11-15 (+7d) | 2026-11-11 → 2026-11-18 (+7d) |
| PRO-SW-1DL-110 | 1ST Material Delivery for Manholes of Sewage Network | 2026-11-19 → 2026-11-26 (+7d) | 2026-11-23 → 2026-11-30 (+7d) |
| 3 | **Testing and Finishes** | 2026-11-24 → 2026-12-01 (+7d) | 2026-11-25 → 2026-12-02 (+7d) |
| PRO-SW-1DL-120 | 1ST Material Delivery for Manholes Covers of Sewage Network | 2026-11-24 → 2026-12-01 (+7d) | 2026-11-25 → 2026-12-02 (+7d) |
| DL | **Material Delivery & Site Inspection** | 2026-11-24 → 2026-12-01 (+7d) | 2026-12-05 → 2026-12-12 (+7d) |
| 1 | **Main Line Sections** | 2026-11-24 → 2026-12-01 (+7d) | 2026-12-05 → 2026-12-12 (+7d) |
| PRO-R25-SW-DL-110 | Material Delivery & Site Inspection of Manholes for Sewage Network | 2026-11-24 → 2026-12-01 (+7d) | 2026-11-28 → 2026-12-05 (+7d) |
| PRO-R25-SW-DL-100 | Material Delivery & Site Inspection of Main Line Pipes for Sewage Network | 2026-12-01 → 2026-12-08 (+7d) | 2026-12-05 → 2026-12-12 (+7d) |
| 3 | **Testing and Finishes** | 2026-11-26 → 2026-12-03 (+7d) | 2026-11-30 → 2026-12-07 (+7d) |
| PRO-R25-SW-DL-120 | Material Delivery & Site Inspection of Manholes Covers for Sewage Network | 2026-11-26 → 2026-12-03 (+7d) | 2026-11-30 → 2026-12-07 (+7d) |
| TSE | **Treated Sewage Effluent (Tse)** | 2026-10-19 → 2026-10-26 (+7d) | 2026-12-17 → 2026-12-24 (+7d) |
| PO | **Issuance of Purchase Orders** | 2026-10-19 → 2026-10-26 (+7d) | 2026-10-26 → 2026-11-02 (+7d) |
| PRO-TSE-PO-120 | Issuance of Purchase Order for Materials of Treated Sewage Effluent (Tse) | 2026-10-19 → 2026-10-26 (+7d) | 2026-10-26 → 2026-11-02 (+7d) |
| MF | **Manufacturing of Material** | 2026-10-27 → 2026-11-03 (+7d) | 2026-11-23 → 2026-11-30 (+7d) |
| PRO-TSE-MF-120 | Manufacturing of Materials for Treated Sewage Effluent (Tse) | 2026-10-27 → 2026-11-03 (+7d) | 2026-11-23 → 2026-11-30 (+7d) |
| 1DL | **1st Material Delivery & Site Inspection** | 2026-11-24 → 2026-12-01 (+7d) | 2026-12-01 → 2026-12-08 (+7d) |
| PRO-TSE-1DL-120 | 1ST Material Delivery for Materials of Treated Sewage Effluent (Tse) | 2026-11-24 → 2026-12-01 (+7d) | 2026-12-01 → 2026-12-08 (+7d) |
| DL | **Material Delivery & Site Inspection** | 2026-12-02 → 2026-12-09 (+7d) | 2026-12-17 → 2026-12-24 (+7d) |
| PRO-R25-TSE-DL-120 | Material Delivery & Site Inspection of Materials for Treated Sewage Effluent (Tse) | 2026-12-02 → 2026-12-09 (+7d) | 2026-12-17 → 2026-12-24 (+7d) |
| PW | **Potable Water Network** |  | 2027-03-27 → 2027-04-03 (+7d) |
| PO | **Issuance of Purchase Orders** |  | 2026-10-31 → 2026-11-07 (+7d) |
| 3 | **Fire Hydrant** | 2026-10-19 → 2026-10-26 (+7d) | 2026-10-24 → 2026-10-31 (+7d) |
| PRO-PW-PO-120 | Issuance of Purchase Order for Fire Hydrants of Potable Water Network | 2026-10-19 → 2026-10-26 (+7d) | 2026-10-24 → 2026-10-31 (+7d) |
| 4 | **Testing and Finishes** | 2026-10-25 → 2026-11-01 (+7d) | 2026-10-31 → 2026-11-07 (+7d) |
| PRO-PW-PO-130 | Issuance of Purchase Order for Surface Box of Potable Water Network | 2026-10-25 → 2026-11-01 (+7d) | 2026-10-31 → 2026-11-07 (+7d) |
| MF | **Manufacturing of Material** |  | 2026-12-28 → 2027-01-04 (+7d) |
| 1 | **Main Line Sections** |  | 2026-11-15 → 2026-11-22 (+7d) |
| PRO-PW-MF-110 | Manufacturing of Valves for Potable Water Network | 2026-10-19 → 2026-10-26 (+7d) | 2026-11-15 → 2026-11-22 (+7d) |
| 3 | **Fire Hydrant** | 2026-11-16 → 2026-11-23 (+7d) | 2026-12-02 → 2026-12-09 (+7d) |
| PRO-PW-MF-120 | Manufacturing of Fire Hydrants for Potable Water Network | 2026-11-16 → 2026-11-23 (+7d) | 2026-12-02 → 2026-12-09 (+7d) |
| 4 | **Testing and Finishes** | 2026-11-01 → 2026-11-08 (+7d) | 2026-12-28 → 2027-01-04 (+7d) |
| PRO-PW-MF-130 | Manufacturing for Surface Box of Potable Water Network | 2026-11-01 → 2026-11-08 (+7d) | 2026-12-28 → 2027-01-04 (+7d) |
| 1DL | **1st Material Delivery & Site Inspection** |  | 2027-01-05 → 2027-01-12 (+7d) |
| 1 | **Main Line Sections** |  | 2027-01-05 → 2027-01-12 (+7d) |
| PRO-PW-1DL-110 | 1ST Material Delivery for Valves of Potable Water Network | 2026-12-29 → 2027-01-05 (+7d) | 2027-01-05 → 2027-01-12 (+7d) |
| 3 | **Fire Hydrant** | 2026-12-29 → 2027-01-05 (+7d) | 2027-01-05 → 2027-01-12 (+7d) |
| PRO-PW-1DL-120 | 1ST Material Delivery for Fire Hydrants of Potable Water Network | 2026-12-29 → 2027-01-05 (+7d) | 2027-01-05 → 2027-01-12 (+7d) |
| 4 | **Testing and Finishes** | 2026-12-29 → 2027-01-05 (+7d) | 2027-01-05 → 2027-01-12 (+7d) |
| PRO-PW-1DL-130 | 1ST Material Delivery for Finishes of Potable Water Network | 2026-12-29 → 2027-01-05 (+7d) | 2027-01-05 → 2027-01-12 (+7d) |
| DL | **Material Delivery & Site Inspection** |  | 2027-03-27 → 2027-04-03 (+7d) |

| ID | Task | Start | Finish |
| --- | --- | --- | --- |
| 1 | **Main Line Sections** |  | 2027-01-30 → 2027-02-06 (+7d) |
| PRO-R25-PW-DL-110 | Material Delivery & Site Inspection of Valves for Potable Water Network | 2027-01-06 → 2027-01-13 (+7d) | 2027-01-30 → 2027-02-06 (+7d) |
| 3 | **Fire Hydrant** | 2027-01-06 → 2027-01-13 (+7d) | 2027-01-12 → 2027-01-19 (+7d) |
| PRO-R25-PW-DL-120 | Material Delivery & Site Inspection of Fire Hydrants for Potable Water Network | 2027-01-06 → 2027-01-13 (+7d) | 2027-01-12 → 2027-01-19 (+7d) |
| 4 | **Testing and Finishes** | 2027-01-06 → 2027-01-13 (+7d) | 2027-03-27 → 2027-04-03 (+7d) |
| PRO-R25-PW-DL-130 | Material Delivery & Site Inspection for Finishes of Potable Water Network | 2027-01-06 → 2027-01-13 (+7d) | 2027-03-27 → 2027-04-03 (+7d) |
| IR | **Irrigation Network** | 2026-11-01 → 2026-11-08 (+7d) | 2027-01-26 → 2027-02-02 (+7d) |
| PO | **Issuance of Purchase Orders** | 2026-11-01 → 2026-11-08 (+7d) | 2026-11-10 → 2026-11-17 (+7d) |
| 1 | **Main Line Pipes** | 2026-11-01 → 2026-11-08 (+7d) | 2026-11-10 → 2026-11-17 (+7d) |
| PRO-IR-PO-100 | Issuance of Purchase Order for Main Line Pipes of Irrigation Network | 2026-11-01 → 2026-11-08 (+7d) | 2026-11-05 → 2026-11-12 (+7d) |
| PRO-IR-PO-110 | Issuance of Purchase Order for Valves of Irrigation Network | 2026-11-07 → 2026-11-14 (+7d) | 2026-11-10 → 2026-11-17 (+7d) |
| MF | **Manufacturing of Material** | 2026-11-07 → 2026-11-14 (+7d) | 2026-12-24 → 2026-12-31 (+7d) |
| 1 | **Main Line Pipes** | 2026-11-07 → 2026-11-14 (+7d) | 2026-12-24 → 2026-12-31 (+7d) |
| PRO-IR-MF-100 | Manufacturing of Main Line Pipes for Irrigation Network | 2026-11-07 → 2026-11-14 (+7d) | 2026-11-30 → 2026-12-07 (+7d) |
| PRO-IR-MF-110 | Manufacturing of Valves for Irrigation Network | 2026-12-01 → 2026-12-08 (+7d) | 2026-12-24 → 2026-12-31 (+7d) |
| 1DL | **1st Material Delivery & Site Inspection** | 2026-12-01 → 2026-12-08 (+7d) | 2027-01-02 → 2027-01-09 (+7d) |
| 1 | **Main Line Pipes** | 2026-12-01 → 2026-12-08 (+7d) | 2027-01-02 → 2027-01-09 (+7d) |
| PRO-IR-1DL-100 | 1ST Material Delivery for Main Line Pipes of Irrigation Network | 2026-12-01 → 2026-12-08 (+7d) | 2026-12-08 → 2026-12-15 (+7d) |
| PRO-IR-1DL-110 | 1ST Material Delivery for Valves of Irrigation Network | 2026-12-26 → 2027-01-02 (+7d) | 2027-01-02 → 2027-01-09 (+7d) |
| DL | **Material Delivery & Site Inspection** | 2026-12-09 → 2026-12-16 (+7d) | 2027-01-26 → 2027-02-02 (+7d) |
| 1 | **Main Line Pipes** | 2026-12-09 → 2026-12-16 (+7d) | 2027-01-26 → 2027-02-02 (+7d) |
| PRO-R25-IR-DL-100 | Material Delivery & Site Inspection of Main Line Pipes for Irrigation Network | 2026-12-09 → 2026-12-16 (+7d) | 2027-01-02 → 2027-01-09 (+7d) |
| PRO-R25-IR-DL-110 | Material Delivery & Site Inspection of Valves for Irrigation Network | 2027-01-03 → 2027-01-10 (+7d) | 2027-01-26 → 2027-02-02 (+7d) |
| MV | **Medium Voltage Network** | 2026-11-11 → 2026-11-18 (+7d) | 2027-01-26 → 2027-02-02 (+7d) |
| PO | **Issuance of Purchase Orders** | 2026-11-11 → 2026-11-18 (+7d) | 2026-11-17 → 2026-11-24 (+7d) |
| PRO-MV-PO-100 | Issuance of Purchase Order for Medium Voltage Materials of Medium Voltage Network | 2026-11-11 → 2026-11-18 (+7d) | 2026-11-17 → 2026-11-24 (+7d) |
| MF | **Manufacturing of Material** | 2026-11-18 → 2026-11-25 (+7d) | 2026-12-12 → 2026-12-19 (+7d) |
| PRO-MV-MF-100 | Manufacturing of Medium Voltage Materials for Medium Voltage Network | 2026-11-18 → 2026-11-25 (+7d) | 2026-12-12 → 2026-12-19 (+7d) |
| 1DL | **1st Material Delivery & Site Inspection** | 2026-12-13 → 2026-12-20 (+7d) | 2026-12-20 → 2026-12-27 (+7d) |
| PRO-MV-1DL-100 | 1ST Material Delivery for Medium Voltage Materials of Medium Voltage Network | 2026-12-13 → 2026-12-20 (+7d) | 2026-12-20 → 2026-12-27 (+7d) |
| DL | **Material Delivery & Site Inspection** | 2027-01-03 → 2027-01-10 (+7d) | 2027-01-26 → 2027-02-02 (+7d) |
| PRO-MV-DL-100 | Material Delivery & Site Inspection of Medium Voltage Materials for Medium Voltage Network | 2027-01-03 → 2027-01-10 (+7d) | 2027-01-26 → 2027-02-02 (+7d) |
| LV | **Low Voltage Network** | 2026-10-19 → 2026-10-26 (+7d) | 2027-03-29 → 2027-04-05 (+7d) |
| PO | **Issuance of Purchase Orders** | 2026-10-19 → 2026-10-26 (+7d) | 2026-11-19 → 2026-11-26 (+7d) |
| 1 | **Main Low Voltage Cables Works** | 2026-10-19 → 2026-10-26 (+7d) | 2026-10-26 → 2026-11-02 (+7d) |
| PRO-LV-ML-PO-100 | Issuance of Purchase Order for Main Low Voltage Cables of Low Voltage Network | 2026-10-19 → 2026-10-26 (+7d) | 2026-10-26 → 2026-11-02 (+7d) |
| 2 | **Service Low Voltage Cables Works** | 2026-10-19 → 2026-10-26 (+7d) | 2026-10-26 → 2026-11-02 (+7d) |
| PRO-LV-HC-PO-100 | Issuance of Purchase Order for Service Low Voltage Cables of Low Voltage Network | 2026-10-19 → 2026-10-26 (+7d) | 2026-10-26 → 2026-11-02 (+7d) |
| 3 | **Distribution Pillar Works** | 2026-10-27 → 2026-11-03 (+7d) | 2026-11-11 → 2026-11-18 (+7d) |
| PRO-LV-DP-PO-100 | Issuance of Purchase Order for Distribution Pillars of Low Voltage Network | 2026-10-27 → 2026-11-03 (+7d) | 2026-11-03 → 2026-11-10 (+7d) |
| PRO-LV-DP-PO-110 | Issuance of Purchase Order for Low Voltage Earthing of Low Voltage Network | 2026-11-04 → 2026-11-11 (+7d) | 2026-11-11 → 2026-11-18 (+7d) |
| 4 | **Termination and Testing Works** | 2026-11-12 → 2026-11-19 (+7d) | 2026-11-19 → 2026-11-26 (+7d) |
| PRO-LV-TT-PO-100 | Issuance of Purchase Order for Cable Lugs of Low Voltage Network | 2026-11-12 → 2026-11-19 (+7d) | 2026-11-19 → 2026-11-26 (+7d) |
| MF | **Manufacturing of Material** | 2026-10-27 → 2026-11-03 (+7d) | 2027-02-09 → 2027-02-16 (+7d) |
| 1 | **Main Low Voltage Cables Works** | 2026-10-27 → 2026-11-03 (+7d) | 2026-11-30 → 2026-12-07 (+7d) |
| PRO-LV-ML-MF-100 | Manufacturing of Main Low Voltage Cables for Low Voltage Network | 2026-10-27 → 2026-11-03 (+7d) | 2026-11-30 → 2026-12-07 (+7d) |
| 2 | **Service Low Voltage Cables Works** | 2026-10-27 → 2026-11-03 (+7d) | 2026-11-30 → 2026-12-07 (+7d) |
| PRO-LV-HC-MF-100 | Manufacturing of Service Low Voltage Cables for Low Voltage Network | 2026-10-27 → 2026-11-03 (+7d) | 2026-11-30 → 2026-12-07 (+7d) |
| 3 | **Distribution Pillar Works** | 2026-11-04 → 2026-11-11 (+7d) | 2026-12-28 → 2027-01-04 (+7d) |
| PRO-LV-DP-MF-100 | Manufacturing of Distribution Pillars for Low Voltage Network | 2026-11-04 → 2026-11-11 (+7d) | 2026-12-20 → 2026-12-27 (+7d) |
| PRO-LV-DP-MF-110 | Manufacturing of Low Voltage Earthing for Low Voltage Network | 2026-11-12 → 2026-11-19 (+7d) | 2026-12-28 → 2027-01-04 (+7d) |
| 4 | **Termination and Testing Works** | 2026-11-21 → 2026-11-28 (+7d) | 2027-02-09 → 2027-02-16 (+7d) |
| PRO-LV-TT-MF-100 | Manufacturing of Cable Lugs for Low Voltage Network | 2026-11-21 → 2026-11-28 (+7d) | 2027-02-09 → 2027-02-16 (+7d) |
| 1DL | **1st Delivery of Material to Site** | 2026-12-01 → 2026-12-08 (+7d) | 2027-02-10 → 2027-02-17 (+7d) |
| 1 | **Main Low Voltage Cables Works** | 2026-12-01 → 2026-12-08 (+7d) | 2027-01-09 → 2027-01-16 (+7d) |
| PRO-LV-ML-1DL-100 | 1ST Material Delivery for Main Low Voltage Cables of Low Voltage Network | 2026-12-01 → 2026-12-08 (+7d) | 2027-01-09 → 2027-01-16 (+7d) |
| 2 | **Service Low Voltage Cables Works** | 2027-01-10 → 2027-01-17 (+7d) | 2027-01-17 → 2027-01-24 (+7d) |
| PRO-LV-HC-1DL-100 | 1ST Material Delivery for Service Low Voltage Cables of Low Voltage Network | 2027-01-10 → 2027-01-17 (+7d) | 2027-01-17 → 2027-01-24 (+7d) |
| 3 | **Distribution Pillar Works** | 2027-01-18 → 2027-01-25 (+7d) | 2027-02-02 → 2027-02-09 (+7d) |
| PRO-LV-DP-1DL-100 | 1ST Material Delivery for Distribution Pillars of Low Voltage Network | 2027-01-18 → 2027-01-25 (+7d) | 2027-01-25 → 2027-02-01 (+7d) |
| PRO-LV-DP-1DL-110 | 1ST Material Delivery for Low Voltage Earthing of Low Voltage Network | 2027-01-26 → 2027-02-02 (+7d) | 2027-02-02 → 2027-02-09 (+7d) |
| 4 | **Termination and Testing Works** | 2027-02-03 → 2027-02-10 (+7d) | 2027-02-10 → 2027-02-17 (+7d) |
| PRO-LV-TT-1DL-100 | 1ST Material Delivery for Cable Lugs of Low Voltage Network | 2027-02-03 → 2027-02-10 (+7d) | 2027-02-10 → 2027-02-17 (+7d) |
| DL | **Delivery of Material to Site** | 2027-01-10 → 2027-01-17 (+7d) | 2027-03-29 → 2027-04-05 (+7d) |
| 1 | **Main Low Voltage Cables Works** | 2027-01-10 → 2027-01-17 (+7d) | 2027-01-17 → 2027-01-24 (+7d) |
| PRO-LV-ML-DL-100 | Material Delivery of Main Low Voltage Cables for Low Voltage Network | 2027-01-10 → 2027-01-17 (+7d) | 2027-01-17 → 2027-01-24 (+7d) |
| 2 | **Service Low Voltage Cables Works** | 2027-01-18 → 2027-01-25 (+7d) | 2027-02-10 → 2027-02-17 (+7d) |
| PRO-LV-HC-DL-100 | Material Delivery of Service Low Voltage Cables for Low Voltage Network | 2027-01-18 → 2027-01-25 (+7d) | 2027-02-10 → 2027-02-17 (+7d) |
| 3 | **Distribution Pillar Works** | 2027-02-10 → 2027-02-17 (+7d) | 2027-03-04 → 2027-03-15 (+11d) |
| PRO-LV-DP-DL-120 | Material Delivery of Low Voltage Earthing for Low Voltage Network | 2027-02-10 → 2027-02-17 (+7d) | 2027-03-04 → 2027-03-15 (+11d) |

| ID | Task | Start | Finish |
| --- | --- | --- | --- |
| PRO-LV-DP-DL-100 | Material Delivery of Distribution Pillars for Low Voltage Network | 2027-02-11 → 2027-02-18 (+7d) | 2027-03-04 → 2027-03-15 (+11d) |
| 4 | **Termination and Testing Works** | 2027-03-06 → 2027-03-16 (+10d) | 2027-03-29 → 2027-04-05 (+7d) |
| PRO-LV-TT-DL-100 | Material Delivery of Cable Lugs for Low Voltage Network | 2027-03-06 → 2027-03-16 (+10d) | 2027-03-29 → 2027-04-05 (+7d) |
| SL | **Street Lighting Network** | 2026-11-12 → 2026-11-19 (+7d) | 2027-04-15 → 2027-04-22 (+7d) |
| PO | **Issuance of Purchase Orders** | 2026-11-12 → 2026-11-19 (+7d) | 2026-12-01 → 2026-12-08 (+7d) |
| 1 | **Cabling Works** | 2026-11-12 → 2026-11-19 (+7d) | 2026-11-17 → 2026-11-24 (+7d) |
| PRO-SL-PO-100 | Issuance of Purchase Order for Lighting Cables of Street Lighting Network | 2026-11-12 → 2026-11-19 (+7d) | 2026-11-17 → 2026-11-24 (+7d) |
| 2 | **Lighting Poles Works** | 2026-11-12 → 2026-11-19 (+7d) | 2026-11-17 → 2026-11-24 (+7d) |
| PRO-SL-PO-110 | Issuance of Purchase Order for Lighting Poles Foundations of Street Lighting Network | 2026-11-12 → 2026-11-19 (+7d) | 2026-11-17 → 2026-11-24 (+7d) |
| PRO-SL-PO-120 | Issuance of Purchase Order for Lighting Poles of Street Lighting Network | 2026-11-12 → 2026-11-19 (+7d) | 2026-11-17 → 2026-11-24 (+7d) |
| PRO-SL-PO-140 | Issuance of Purchase Order for Lighting Fixtures of Street Lighting Network | 2026-11-12 → 2026-11-19 (+7d) | 2026-11-17 → 2026-11-24 (+7d) |
| 3 | **Distribution Panel Board** | 2026-11-12 → 2026-11-19 (+7d) | 2026-11-18 → 2026-11-25 (+7d) |
| PRO-SL-PO-160 | Issuance of Purchase Order for Distrubution Panel Boards of Street Lighting Network | 2026-11-12 → 2026-11-19 (+7d) | 2026-11-18 → 2026-11-25 (+7d) |
| 4 | **Earthing System Works** | 2026-11-25 → 2026-12-02 (+7d) | 2026-12-01 → 2026-12-08 (+7d) |
| PRO-SL-PO-150 | Issuance of Purchase Order for Lighting Earthing of Street Lighting Network | 2026-11-25 → 2026-12-02 (+7d) | 2026-12-01 → 2026-12-08 (+7d) |
| 5 | **Termination and Testing Works** | 2026-11-18 → 2026-11-25 (+7d) | 2026-11-25 → 2026-12-02 (+7d) |
| PRO-SL-PO-170 | Issuance of Purchase Order for Cable Lugs of Street Lighting Network | 2026-11-18 → 2026-11-25 (+7d) | 2026-11-24 → 2026-12-01 (+7d) |
| PRO-SL-PO-130 | Issuance of Purchase Order for Fuse Boxes of Street Lighting Network | 2026-11-19 → 2026-11-26 (+7d) | 2026-11-25 → 2026-12-02 (+7d) |
| MF | **Manufacturing of Material** | 2026-11-18 → 2026-11-25 (+7d) | 2027-03-15 → 2027-03-22 (+7d) |
| 1 | **Cabling Works** | 2026-11-18 → 2026-11-25 (+7d) | 2026-12-10 → 2026-12-17 (+7d) |
| PRO-SL-MF-100 | Manufacturing of Lighting Cables for Street Lighting Network | 2026-11-18 → 2026-11-25 (+7d) | 2026-12-10 → 2026-12-17 (+7d) |
| 2 | **Lighting Poles Works** | 2026-12-12 → 2026-12-19 (+7d) | 2027-01-04 → 2027-01-11 (+7d) |
| PRO-SL-MF-110 | Manufacturing of Lighting Poles Foundations for Street Lighting Network | 2026-12-12 → 2026-12-19 (+7d) | 2027-01-04 → 2027-01-11 (+7d) |
| PRO-SL-MF-120 | Manufacturing of Lighting Poles for Street Lighting Network | 2026-12-12 → 2026-12-19 (+7d) | 2027-01-04 → 2027-01-11 (+7d) |
| PRO-SL-MF-140 | Manufacturing of Lighting Fixtures for Street Lighting Network | 2026-12-12 → 2026-12-19 (+7d) | 2027-01-04 → 2027-01-11 (+7d) |
| 3 | **Distribution Panel Board** | 2027-01-05 → 2027-01-12 (+7d) | 2027-02-08 → 2027-02-15 (+7d) |
| PRO-SL-MF-160 | Manufacturing of Distrubution Panel Boards for Street Lighting Network | 2027-01-05 → 2027-01-12 (+7d) | 2027-02-08 → 2027-02-15 (+7d) |
| 4 | **Earthing System Works** | 2026-12-02 → 2026-12-09 (+7d) | 2027-01-17 → 2027-01-24 (+7d) |
| PRO-SL-MF-150 | Manufacturing of Lighting Earthing for Street Lighting Network | 2026-12-02 → 2026-12-09 (+7d) | 2027-01-17 → 2027-01-24 (+7d) |
| 5 | **Termination and Testing Works** | 2026-11-26 → 2026-12-03 (+7d) | 2027-03-15 → 2027-03-22 (+7d) |
| PRO-SL-MF-130 | Manufacturing of Fuse Boxes for Street Lighting Network | 2026-11-26 → 2026-12-03 (+7d) | 2027-02-15 → 2027-02-22 (+7d) |
| PRO-SL-MF-170 | Manufacturing of Cable Lugs for Street Lighting Network | 2027-02-16 → 2027-02-23 (+7d) | 2027-03-15 → 2027-03-22 (+7d) |
| 1DL | **1st Material Delivery & Site Inspection** | 2026-12-12 → 2026-12-19 (+7d) | 2027-03-29 → 2027-04-05 (+7d) |
| 1 | **Cabling Works** | 2026-12-12 → 2026-12-19 (+7d) | 2026-12-17 → 2026-12-24 (+7d) |
| PRO-SL-1DL-100 | 1ST Material Delivery for Lighting Cables of Street Lighting Network | 2026-12-12 → 2026-12-19 (+7d) | 2026-12-17 → 2026-12-24 (+7d) |
| 2 | **Lighting Poles Works** | 2027-01-05 → 2027-01-12 (+7d) | 2027-01-25 → 2027-02-01 (+7d) |
| PRO-SL-1DL-110 | 1ST Material Delivery for Lighting Poles Foundations of Street Lighting Network | 2027-01-05 → 2027-01-12 (+7d) | 2027-01-11 → 2027-01-18 (+7d) |
| PRO-SL-1DL-120 | 1ST Material Delivery for Lighting Poles of Street Lighting Network | 2027-01-12 → 2027-01-19 (+7d) | 2027-01-18 → 2027-01-25 (+7d) |
| PRO-SL-1DL-140 | 1ST Material Delivery for Lighting Fixtures of Street Lighting Network | 2027-01-19 → 2027-01-26 (+7d) | 2027-01-25 → 2027-02-01 (+7d) |
| 3 | **Distribution Panel Board** | 2027-02-09 → 2027-02-16 (+7d) | 2027-02-15 → 2027-02-22 (+7d) |
| PRO-SL-1DL-160 | 1ST Material Delivery for Distrubution Panel Boards of Street Lighting Network | 2027-02-09 → 2027-02-16 (+7d) | 2027-02-15 → 2027-02-22 (+7d) |
| 5 | **Termination and Testing Works** | 2027-02-16 → 2027-02-23 (+7d) | 2027-03-22 → 2027-03-29 (+7d) |
| PRO-SL-1DL-130 | 1ST Material Delivery for Fuse Boxes of Street Lighting Network | 2027-02-16 → 2027-02-23 (+7d) | 2027-02-22 → 2027-03-01 (+7d) |
| PRO-SL-1DL-170 | 1ST Material Delivery for Cable Lugs of Street Lighting Network | 2027-03-16 → 2027-03-23 (+7d) | 2027-03-22 → 2027-03-29 (+7d) |
| 4 | **Earthing System Works** | 2027-03-23 → 2027-03-30 (+7d) | 2027-03-29 → 2027-04-05 (+7d) |
| PRO-SL-1DL-150 | 1ST Material Delivery for Lighting Earthing of Street Lighting Network | 2027-03-23 → 2027-03-30 (+7d) | 2027-03-29 → 2027-04-05 (+7d) |
| DL | **Material Delivery & Site Inspection** | 2026-12-19 → 2026-12-26 (+7d) | 2027-04-15 → 2027-04-22 (+7d) |
| 1 | **Cabling Works** | 2026-12-19 → 2026-12-26 (+7d) | 2027-01-11 → 2027-01-18 (+7d) |
| PRO-R25-SL-DL-100 | Material Delivery & Site Inspection of Lighting Cables for Street Lighting Network | 2026-12-19 → 2026-12-26 (+7d) | 2027-01-11 → 2027-01-18 (+7d) |
| 2 | **Lighting Poles Works** | 2027-01-05 → 2027-01-12 (+7d) | 2027-02-22 → 2027-03-01 (+7d) |
| PRO-R25-SL-DL-110 | Material Delivery & Site Inspection of Lighting Poles Foundations for Street Lighting Network | 2027-01-05 → 2027-01-12 (+7d) | 2027-01-28 → 2027-02-04 (+7d) |
| PRO-R25-SL-DL-120 | Material Delivery & Site Inspection of Lighting Poles for Street Lighting Network | 2027-01-30 → 2027-02-06 (+7d) | 2027-02-22 → 2027-03-01 (+7d) |
| PRO-R25-SL-DL-140 | Material Delivery & Site Inspection of Lighting Fixtures for Street Lighting Network | 2027-01-30 → 2027-02-06 (+7d) | 2027-02-22 → 2027-03-01 (+7d) |
| 3 | **Distribution Panel Board** | 2027-02-23 → 2027-03-02 (+7d) | 2027-03-22 → 2027-03-29 (+7d) |
| PRO-R25-SL-DL-160 | Material Delivery & Site Inspection of Distrubution Panel Boards for Street Lighting Network | 2027-02-23 → 2027-03-02 (+7d) | 2027-03-22 → 2027-03-29 (+7d) |
| 4 | **Termination and Testing Works** | 2027-03-23 → 2027-03-30 (+7d) | 2027-04-15 → 2027-04-22 (+7d) |
| PRO-R25-SL-DL-130 | Material Delivery & Site Inspection of Fuse Boxes for Street Lighting Network | 2027-03-23 → 2027-03-30 (+7d) | 2027-04-15 → 2027-04-22 (+7d) |
| PRO-R25-SL-DL-170 | Material Delivery & Site Inspection of Cable Lugs for Street Lighting Network | 2027-03-23 → 2027-03-30 (+7d) | 2027-04-15 → 2027-04-22 (+7d) |
| 5 | **Earthing System Works** | 2027-03-23 → 2027-03-30 (+7d) | 2027-04-15 → 2027-04-22 (+7d) |
| PRO-R25-SL-DL-150 | Material Delivery & Site Inspection of Lighting Earthing for Street Lighting Network | 2027-03-23 → 2027-03-30 (+7d) | 2027-04-15 → 2027-04-22 (+7d) |
| TE | **Telecom and Light Current Network** | 2026-11-25 → 2026-12-02 (+7d) | 2027-03-16 → 2027-03-23 (+7d) |
| PO | **Issuance of Purchase Orders** | 2026-11-25 → 2026-12-02 (+7d) | 2026-12-17 → 2026-12-24 (+7d) |
| 1 | **Ducts Works** | 2026-11-25 → 2026-12-02 (+7d) | 2026-12-02 → 2026-12-09 (+7d) |
| PRO-TE-PO-100 | Issuance of Purchase Order for Ducts forTelecom Network | 2026-11-25 → 2026-12-02 (+7d) | 2026-12-02 → 2026-12-09 (+7d) |
| 3 | **Manholes Works** | 2026-11-25 → 2026-12-02 (+7d) | 2026-12-02 → 2026-12-09 (+7d) |
| PRO-TE-PO-110 | Issuance of Purchase Order for Manholes forTelecom Network | 2026-11-25 → 2026-12-02 (+7d) | 2026-12-02 → 2026-12-09 (+7d) |
| 2 | **CCTV, Telephone, MSN, ACs System Works** | 2026-11-25 → 2026-12-02 (+7d) | 2026-12-17 → 2026-12-24 (+7d) |
| PRO-CTV-PO-100 | Issuance of Purchase Order for Civil and Finishes Works of CCTV Complete System | 2026-11-25 → 2026-12-02 (+7d) | 2026-12-17 → 2026-12-24 (+7d) |
| MF | **Manufacturing of Material** | 2026-12-03 → 2026-12-10 (+7d) | 2027-02-22 → 2027-03-01 (+7d) |
| 1 | **Ducts Works** | 2026-12-03 → 2026-12-10 (+7d) | 2026-12-26 → 2027-01-02 (+7d) |

| ID | Task | Start | Finish |
| --- | --- | --- | --- |
| PRO-TE-MF-100 | Manufacturing of Ducts for Telecom Network | 2026-12-03 → 2026-12-10 (+7d) | 2026-12-26 → 2027-01-02 (+7d) |
| 3 | **Manholes Works** | 2026-12-27 → 2027-01-03 (+7d) | 2027-01-18 → 2027-01-25 (+7d) |
| PRO-TE-MF-110 | Manufacturing of Manholes for Telecom Network | 2026-12-27 → 2027-01-03 (+7d) | 2027-01-18 → 2027-01-25 (+7d) |
| 2 | **CCTV, Telephone, MSN, ACs System Works** | 2027-01-19 → 2027-01-26 (+7d) | 2027-02-22 → 2027-03-01 (+7d) |
| PRO-CTV-MF-100 | Manufacturing of Civil and Finishes Works for CCTV Complete System | 2027-01-19 → 2027-01-26 (+7d) | 2027-02-22 → 2027-03-01 (+7d) |
| 1DL | **1st Material Delivery & Site Inspection** | 2026-12-27 → 2027-01-03 (+7d) | 2027-03-01 → 2027-03-08 (+7d) |
| 1 | **Ducts Works** | 2026-12-27 → 2027-01-03 (+7d) | 2027-01-02 → 2027-01-09 (+7d) |
| PRO-TE-1DL-100 | 1ST Material Delivery for Ducts of Telecom Network | 2026-12-27 → 2027-01-03 (+7d) | 2027-01-02 → 2027-01-09 (+7d) |
| 3 | **Manholes Works** | 2027-01-19 → 2027-01-26 (+7d) | 2027-01-25 → 2027-02-01 (+7d) |
| PRO-TE-1DL-110 | 1ST Material Delivery for Manholes of Telecom Network | 2027-01-19 → 2027-01-26 (+7d) | 2027-01-25 → 2027-02-01 (+7d) |
| 2 | **CCTV, Telephone, MSN, ACs System Works** | 2027-02-23 → 2027-03-02 (+7d) | 2027-03-01 → 2027-03-08 (+7d) |
| PRO-CTV-1DL-100 | 1ST Material Delivery for Civil and Finishes Works of CCTV Complete System | 2027-02-23 → 2027-03-02 (+7d) | 2027-03-01 → 2027-03-08 (+7d) |
| DL | **Material Delivery & Site Inspection** | 2027-01-03 → 2027-01-10 (+7d) | 2027-03-16 → 2027-03-23 (+7d) |
| 1 | **Ducts Works** | 2027-01-03 → 2027-01-10 (+7d) | 2027-01-19 → 2027-01-26 (+7d) |
| PRO-R25-TE-DL-100 | Material Delivery & Site Inspection for Ducts of Telecom Network | 2027-01-03 → 2027-01-10 (+7d) | 2027-01-19 → 2027-01-26 (+7d) |
| 3 | **Manholes Works** | 2027-01-26 → 2027-02-02 (+7d) | 2027-02-11 → 2027-02-18 (+7d) |
| PRO-R25-TE-DL-110 | Material Delivery & Site Inspection of Manholes for Telecom Network | 2027-01-26 → 2027-02-02 (+7d) | 2027-02-11 → 2027-02-18 (+7d) |
| 2 | **CCTV, Telephone, MSN, ACs System Works** | 2027-03-02 → 2027-03-13 (+11d) | 2027-03-16 → 2027-03-23 (+7d) |
| PRO-R25-CTV-DL-100 | Material Delivery & Site Inspection of for Civil and Finishes Works of CCTV Complete System | 2027-03-02 → 2027-03-13 (+11d) | 2027-03-16 → 2027-03-23 (+7d) |
| RD | **Road Works** | 2026-10-19 → 2026-10-26 (+7d) | 2027-04-25 → 2027-05-02 (+7d) |
| PO | **Issuance of Purchase Orders** | 2026-10-19 → 2026-10-26 (+7d) | 2026-12-06 → 2026-12-13 (+7d) |
| 1 | **Road Works** | 2026-10-19 → 2026-10-26 (+7d) | 2026-12-06 → 2026-12-13 (+7d) |
| PRO-RD-PO-100 | Issuance of Purchase Order for Subgrade of Road Works | 2026-10-19 → 2026-10-26 (+7d) | 2026-10-26 → 2026-11-02 (+7d) |
| PRO-RD-PO-110 | Issuance of Purchase Order for Aggregate Base Course of Road Works | 2026-10-27 → 2026-11-03 (+7d) | 2026-11-03 → 2026-11-10 (+7d) |
| PRO-RD-PO-120 | Issuance of Purchase Order for Prime Coat of Road Works | 2026-11-04 → 2026-11-11 (+7d) | 2026-11-11 → 2026-11-18 (+7d) |
| PRO-RD-PO-130 | Issuance of Purchase Order for Asphaltic Base Course Layer of Road Works | 2026-11-12 → 2026-11-19 (+7d) | 2026-11-19 → 2026-11-26 (+7d) |
| PRO-RD-PO-180 | Issuance of Purchase Order for Asphaltic Wearing Course Layer for Roads Network | 2026-11-21 → 2026-11-28 (+7d) | 2026-11-28 → 2026-12-05 (+7d) |
| PRO-RD-PO-190 | Issuance of Purchase Order for Tack Coat Layer for Roads Network | 2026-11-29 → 2026-12-06 (+7d) | 2026-12-06 → 2026-12-13 (+7d) |
| 2 | **Pavement Works** | 2026-11-04 → 2026-11-11 (+7d) | 2026-11-19 → 2026-11-26 (+7d) |
| PRO-RD-PO-140 | Issuance of Purchase Order for Interlock Tiles of Landscaping | 2026-11-04 → 2026-11-11 (+7d) | 2026-11-11 → 2026-11-18 (+7d) |
| PRO-RD-PO-150 | Issuance of Purchase Order for Curbstones of Landscaping | 2026-11-12 → 2026-11-19 (+7d) | 2026-11-19 → 2026-11-26 (+7d) |
| 3 | **Traffic Signs Boards and Roads Marking** | 2026-11-21 → 2026-11-28 (+7d) | 2026-12-06 → 2026-12-13 (+7d) |
| PRO-RD-PO-160 | Issuance of Purchase Order for Traffic Signs Boards of Road Works | 2026-11-21 → 2026-11-28 (+7d) | 2026-11-28 → 2026-12-05 (+7d) |
| PRO-RD-PO-170 | Issuance of Purchase Order for Road Markings of Road Works | 2026-11-29 → 2026-12-06 (+7d) | 2026-12-06 → 2026-12-13 (+7d) |
| MF | **Manufacturing of Material** | 2026-10-27 → 2026-11-03 (+7d) | 2027-03-13 → 2027-03-20 (+7d) |
| 1 | **Road Works** | 2026-10-27 → 2026-11-03 (+7d) | 2027-02-08 → 2027-02-15 (+7d) |
| PRO-RD-MF-100 | Manufacturing of Subgrade for Road Works | 2026-10-27 → 2026-11-03 (+7d) | 2026-11-07 → 2026-11-14 (+7d) |
| PRO-RD-MF-110 | Manufacturing of Aggregate Base Course for Road Works | 2026-11-08 → 2026-11-15 (+7d) | 2026-11-30 → 2026-12-07 (+7d) |
| PRO-RD-MF-120 | Manufacturing of Prime Coat for Road Works | 2026-12-01 → 2026-12-08 (+7d) | 2026-12-23 → 2026-12-30 (+7d) |
| PRO-RD-MF-190 | Manufacturing of Tack Coat Layer for Roads Network | 2026-12-07 → 2026-12-14 (+7d) | 2027-02-02 → 2027-02-09 (+7d) |
| PRO-RD-MF-130 | Manufacturing of Asphaltic Base Course Layer for Road Works | 2026-12-24 → 2026-12-31 (+7d) | 2027-01-16 → 2027-01-23 (+7d) |
| PRO-RD-MF-180 | Manufacturing of Asphaltic Wearing Course Layer for Roads Network | 2027-01-17 → 2027-01-24 (+7d) | 2027-02-08 → 2027-02-15 (+7d) |
| 2 | **Pavement Works** | 2027-02-03 → 2027-02-10 (+7d) | 2027-02-27 → 2027-03-06 (+7d) |
| PRO-RD-MF-140 | Manufacturing of Interlock Tiles for Landscaping | 2027-02-03 → 2027-02-10 (+7d) | 2027-02-27 → 2027-03-06 (+7d) |
| PRO-RD-MF-150 | Manufacturing of Curbstones for Landscaping | 2027-02-03 → 2027-02-10 (+7d) | 2027-02-25 → 2027-03-04 (+7d) |
| 3 | **Traffic Signs Boards and Roads Marking** | 2026-11-29 → 2026-12-06 (+7d) | 2027-03-13 → 2027-03-20 (+7d) |
| PRO-RD-MF-160 | Manufacturing of Traffic Signs Boards for Road Works | 2026-11-29 → 2026-12-06 (+7d) | 2027-03-01 → 2027-03-08 (+7d) |
| PRO-RD-MF-170 | Manufacturing of Road Markings for Road Works | 2026-12-07 → 2026-12-14 (+7d) | 2027-03-13 → 2027-03-20 (+7d) |
| 1DL | **1st Material Delivery & Site Inspection** | 2026-11-08 → 2026-11-15 (+7d) | 2027-04-04 → 2027-04-11 (+7d) |
| 1 | **Road Works** | 2026-11-08 → 2026-11-15 (+7d) | 2027-02-24 → 2027-03-03 (+7d) |
| PRO-RD-1DL-100 | 1ST Material Delivery for Subgrade of Road Works | 2026-11-08 → 2026-11-15 (+7d) | 2026-11-15 → 2026-11-22 (+7d) |
| PRO-RD-1DL-110 | 1ST Material Delivery for Aggregate Base Course of Road Works | 2026-12-01 → 2026-12-08 (+7d) | 2026-12-08 → 2026-12-15 (+7d) |
| PRO-RD-1DL-120 | 1ST Material Delivery for Prime Coat of Road Works | 2026-12-24 → 2026-12-31 (+7d) | 2027-01-10 → 2027-01-17 (+7d) |
| PRO-RD-1DL-130 | 1ST Material Delivery for Asphaltic Base Course Layer of Road Works | 2027-01-17 → 2027-01-24 (+7d) | 2027-01-24 → 2027-01-31 (+7d) |
| PRO-RD-1DL-180 | 1ST Material Delivery for Asphaltic Wearing Course Layer for Roads Network | 2027-02-09 → 2027-02-16 (+7d) | 2027-02-16 → 2027-02-23 (+7d) |
| PRO-RD-1DL-190 | 1ST Material Delivery for Tack Coat Layer for Roads Network | 2027-02-17 → 2027-02-24 (+7d) | 2027-02-24 → 2027-03-03 (+7d) |
| 2 | **Pavement Works** | 2027-02-28 → 2027-03-07 (+7d) | 2027-03-18 → 2027-03-25 (+7d) |
| PRO-RD-1DL-140 | 1ST Material Delivery for Interlock Tiles of Landscaping | 2027-02-28 → 2027-03-07 (+7d) | 2027-03-07 → 2027-03-17 (+10d) |
| PRO-RD-1DL-150 | 1ST Material Delivery for Curbstones of Landscaping | 2027-03-08 → 2027-03-18 (+10d) | 2027-03-18 → 2027-03-25 (+7d) |
| 3 | **Traffic Signs Boards and Roads Marking** | 2027-03-20 → 2027-03-27 (+7d) | 2027-04-04 → 2027-04-11 (+7d) |
| PRO-RD-1DL-170 | 1ST Material Delivery for Road Markings of Road Works | 2027-03-20 → 2027-03-27 (+7d) | 2027-03-27 → 2027-04-03 (+7d) |
| PRO-RD-1DL-160 | 1ST Material Delivery for Traffic Signs Boards of Road Works | 2027-03-28 → 2027-04-04 (+7d) | 2027-04-04 → 2027-04-11 (+7d) |
| DL | **Material Delivery & Site Inspection** | 2026-11-16 → 2026-11-23 (+7d) | 2027-04-25 → 2027-05-02 (+7d) |
| 1 | **Pre-Bituminous Construction** | 2026-11-16 → 2026-11-23 (+7d) | 2027-01-03 → 2027-01-10 (+7d) |
| PRO-R25-RD-DL-100 | Material Delivery & Site Inspection for Subgrade of Road Works | 2026-11-16 → 2026-11-23 (+7d) | 2026-12-09 → 2026-12-16 (+7d) |
| PRO-R25-RD-DL-110 | Material Delivery & Site Inspection for Aggregate Base Course of Road Works | 2026-12-10 → 2026-12-17 (+7d) | 2027-01-03 → 2027-01-10 (+7d) |
| 4 | **Bituminous Construction** | 2027-01-11 → 2027-01-18 (+7d) | 2027-03-17 → 2027-03-24 (+7d) |
| PRO-R25-RD-DL-160 | Material Delivery & Site Inspection for Prime Coat Layer of Road Works | 2027-01-11 → 2027-01-18 (+7d) | 2027-01-23 → 2027-01-30 (+7d) |
| PRO-R25-RD-DL-170 | Material Delivery & Site Inspection for Asphaltic Base Course Layer of Road Works | 2027-01-25 → 2027-02-01 (+7d) | 2027-02-06 → 2027-02-13 (+7d) |
| PRO-RD-DL-200 | Material Delivery for Asphaltic Wearing Course Layer for Roads Network | 2027-02-17 → 2027-02-24 (+7d) | 2027-03-01 → 2027-03-08 (+7d) |

| ID | Task | Start | Finish |
| --- | --- | --- | --- |
| PRO-RD-DL-210 | Material Delivery for Tack Coat Layer for Roads Network | 2027-03-02 → 2027-03-13 (+11d) | 2027-03-17 → 2027-03-24 (+7d) |
| 2 | **Pavement Works** | 2027-03-18 → 2027-03-25 (+7d) | 2027-04-12 → 2027-04-19 (+7d) |
| PRO-R25-RD-DL-120 | Material Delivery & Site Inspection of Interlock Tiles for Landscaping | 2027-03-18 → 2027-03-25 (+7d) | 2027-03-30 → 2027-04-06 (+7d) |
| PRO-R25-RD-DL-130 | Material Delivery & Site Inspection of Curbstones for Landscaping | 2027-03-31 → 2027-04-07 (+7d) | 2027-04-12 → 2027-04-19 (+7d) |
| 3 | **Traffic Signs Boards and Roads Marking** | 2027-03-31 → 2027-04-07 (+7d) | 2027-04-25 → 2027-05-02 (+7d) |
| PRO-R25-RD-DL-150 | Material Delivery & Site Inspection of Road Markings For Road Works | 2027-03-31 → 2027-04-07 (+7d) | 2027-04-12 → 2027-04-19 (+7d) |
| PRO-R25-RD-DL-140 | Material Delivery & Site Inspection of Traffic Signs Boards For Road Works | 2027-04-13 → 2027-04-20 (+7d) | 2027-04-25 → 2027-05-02 (+7d) |
| 1 | **Superstructure Works** | 2026-10-19 → 2026-10-26 (+7d) | 2026-12-19 → 2026-12-26 (+7d) |
| 1 | **Issuance of Purchase Orders** | 2026-10-19 → 2026-10-26 (+7d) | 2026-10-31 → 2026-11-07 (+7d) |
| SL1 | **Water Pump Station** | 2026-10-19 → 2026-10-26 (+7d) | 2026-10-22 → 2026-10-29 (+7d) |
| PRO-LS-CV-PO-20 | Issuance of Purchase Order for Works for Water Pump Station | 2026-10-19 → 2026-10-26 (+7d) | 2026-10-22 → 2026-10-29 (+7d) |
| SL11 | **Storage Tank (TSE)** | 2026-10-24 → 2026-10-31 (+7d) | 2026-10-31 → 2026-11-07 (+7d) |
| PRO-TSE-CV-PO-30 | Issuance of Purchase Order for Works for Storage Tank (TSE) | 2026-10-24 → 2026-10-31 (+7d) | 2026-10-31 → 2026-11-07 (+7d) |
| SL111 | **Control Room** | 2026-10-24 → 2026-10-31 (+7d) | 2026-10-31 → 2026-11-07 (+7d) |
| PRO-TSE-CV-PO-40 | Issuance of Purchase Order for Works for Control Room | 2026-10-24 → 2026-10-31 (+7d) | 2026-10-31 → 2026-11-07 (+7d) |
| SL | **Sewage Pump Stations** | 2026-10-24 → 2026-10-31 (+7d) | 2026-10-31 → 2026-11-07 (+7d) |
| PRO-SPS-CV-PO-10 | Issuance of Purchase Order for Works of Sewage Pump Station | 2026-10-24 → 2026-10-31 (+7d) | 2026-10-31 → 2026-11-07 (+7d) |
| SL12 | **Gaurd Room** | 2026-10-24 → 2026-10-31 (+7d) | 2026-10-31 → 2026-11-07 (+7d) |
| PRO-GR-CV-PO-40 | Issuance of Purchase Order for Materials for Gaurd Room | 2026-10-24 → 2026-10-31 (+7d) | 2026-10-31 → 2026-11-07 (+7d) |
| SL121 | **Boundary Fence** | 2026-10-24 → 2026-10-31 (+7d) | 2026-10-31 → 2026-11-07 (+7d) |
| PRO-FE-CV-PO-50 | Issuance of Purchase Order for Materials for Boundary Fence | 2026-10-24 → 2026-10-31 (+7d) | 2026-10-31 → 2026-11-07 (+7d) |
| 2 | **Manufacturing of Material** | 2026-10-24 → 2026-10-31 (+7d) | 2026-11-24 → 2026-12-01 (+7d) |
| SL1 | **Water Pump Station** | 2026-10-24 → 2026-10-31 (+7d) | 2026-10-31 → 2026-11-07 (+7d) |
| PRO-LS-CV-MF-30 | Manufacturing of Works for Works for Water Pump Station | 2026-10-24 → 2026-10-31 (+7d) | 2026-10-31 → 2026-11-07 (+7d) |
| SL11 | **Storage Tank (TSE)** | 2026-11-01 → 2026-11-08 (+7d) | 2026-11-16 → 2026-11-23 (+7d) |
| PRO-TSE-CV-MF-40 | Manufacturing of Works for Storage Tank (TSE) | 2026-11-01 → 2026-11-08 (+7d) | 2026-11-16 → 2026-11-23 (+7d) |
| SL111 | **Control Room** | 2026-11-01 → 2026-11-08 (+7d) | 2026-11-24 → 2026-12-01 (+7d) |
| PRO-TSE-CV-MF-50 | Manufacturing of Works for Control Room | 2026-11-01 → 2026-11-08 (+7d) | 2026-11-24 → 2026-12-01 (+7d) |
| SL | **Sewage Pump Stations** | 2026-11-01 → 2026-11-08 (+7d) | 2026-11-24 → 2026-12-01 (+7d) |
| PRO-SPS-CV-MF-10 | Manufacturing of Works of Sewage Pump Station | 2026-11-01 → 2026-11-08 (+7d) | 2026-11-24 → 2026-12-01 (+7d) |
| SL12 | **Gaurd Room** | 2026-11-01 → 2026-11-08 (+7d) | 2026-11-24 → 2026-12-01 (+7d) |
| PRO-GR-CV-MF-50 | Manufacturing of Materials for Gaurd Room | 2026-11-01 → 2026-11-08 (+7d) | 2026-11-24 → 2026-12-01 (+7d) |
| SL121 | **Boundary Fence** | 2026-11-01 → 2026-11-08 (+7d) | 2026-11-24 → 2026-12-01 (+7d) |
| PRO-FE-CV-MF-60 | Manufacturing of Materials for Boundary Fence | 2026-11-01 → 2026-11-08 (+7d) | 2026-11-24 → 2026-12-01 (+7d) |
| 3 | **1st Material Delivery & Site Inspection** | 2026-10-24 → 2026-10-31 (+7d) | 2026-12-02 → 2026-12-09 (+7d) |
| SL1 | **Water Pump Station** | 2026-10-24 → 2026-10-31 (+7d) | 2026-10-29 → 2026-11-05 (+7d) |
| PRO-LS-CV-1DL-40 | 1ST Material Delivery for Works of Water Pump Station | 2026-10-24 → 2026-10-31 (+7d) | 2026-10-29 → 2026-11-05 (+7d) |
| SL11 | **Storage Tank (TSE)** | 2026-11-17 → 2026-11-24 (+7d) | 2026-11-24 → 2026-12-01 (+7d) |
| PRO-TSE-CV-1DL-50 | 1ST Material Delivery for Works for Storage Tank (TSE) | 2026-11-17 → 2026-11-24 (+7d) | 2026-11-24 → 2026-12-01 (+7d) |
| SL111 | **Control Room** | 2026-11-25 → 2026-12-02 (+7d) | 2026-12-02 → 2026-12-09 (+7d) |
| PRO-TSE-CV-1DL-60 | 1ST Material Delivery for Works for Control Room | 2026-11-25 → 2026-12-02 (+7d) | 2026-12-02 → 2026-12-09 (+7d) |
| SL | **Sewage Pump Stations** | 2026-11-25 → 2026-12-02 (+7d) | 2026-12-02 → 2026-12-09 (+7d) |
| PRO-SPS-CV-1DL-10 | 1ST Material Delivery for Works of Sewage Pump Station | 2026-11-25 → 2026-12-02 (+7d) | 2026-12-02 → 2026-12-09 (+7d) |
| SL12 | **Gaurd Room** | 2026-11-25 → 2026-12-02 (+7d) | 2026-12-02 → 2026-12-09 (+7d) |
| PRO-GR-CV-1DL-60 | 1ST Material Delivery for Materials for Gaurd Room | 2026-11-25 → 2026-12-02 (+7d) | 2026-12-02 → 2026-12-09 (+7d) |
| SL121 | **Boundary Fence** | 2026-11-25 → 2026-12-02 (+7d) | 2026-12-02 → 2026-12-09 (+7d) |
| PRO-FE-CV-1DL-70 | 1ST Material Delivery for Materials for Boundary Fence | 2026-11-25 → 2026-12-02 (+7d) | 2026-12-02 → 2026-12-09 (+7d) |
| 4 | **Material Delivery & Site Inspection** | 2026-10-24 → 2026-10-31 (+7d) | 2026-12-19 → 2026-12-26 (+7d) |
| SL1 | **Water Pump Station** | 2026-10-24 → 2026-10-31 (+7d) | 2026-11-03 → 2026-11-10 (+7d) |
| PRO-LS-CV-DL-50 | Material Delivery & Site Inspection for Works for Water Pump Station | 2026-10-24 → 2026-10-31 (+7d) | 2026-11-03 → 2026-11-10 (+7d) |
| SL11 | **Storage Tank (TSE)** | 2026-11-04 → 2026-11-11 (+7d) | 2026-12-05 → 2026-12-12 (+7d) |
| PRO-TSE-CV-DL-60 | Material Delivery & Site Inspection for Works for Storage Tank (TSE) | 2026-11-04 → 2026-11-11 (+7d) | 2026-12-05 → 2026-12-12 (+7d) |
| SL111 | **Control Room** | 2026-12-03 → 2026-12-10 (+7d) | 2026-12-19 → 2026-12-26 (+7d) |
| PRO-TSE-CV-DL-70 | Material Delivery & Site Inspection for Works for Control Room | 2026-12-03 → 2026-12-10 (+7d) | 2026-12-19 → 2026-12-26 (+7d) |
| SL | **Sewage Pump Stations** | 2026-12-03 → 2026-12-10 (+7d) | 2026-12-19 → 2026-12-26 (+7d) |
| PRO-SPS-CV-DL-10 | Material Delivery & Site Inspection for Works for Pump Station | 2026-12-03 → 2026-12-10 (+7d) | 2026-12-19 → 2026-12-26 (+7d) |
| SL12 | **Gaurd Room** | 2026-12-03 → 2026-12-10 (+7d) | 2026-12-19 → 2026-12-26 (+7d) |
| PRO-GR-CV-DL-70 | Material Delivery & Site Inspection for Materials for Gaurd Room | 2026-12-03 → 2026-12-10 (+7d) | 2026-12-19 → 2026-12-26 (+7d) |
| SL121 | **Boundary Fence** | 2026-12-03 → 2026-12-10 (+7d) | 2026-12-19 → 2026-12-26 (+7d) |
| PRO-FE-CV-DL-80 | Material Delivery & Site Inspection for Materials for Boundary Fence | 2026-12-03 → 2026-12-10 (+7d) | 2026-12-19 → 2026-12-26 (+7d) |
| IR1 | **Softscape and Planting Works** | 2026-11-04 → 2026-11-11 (+7d) | 2027-02-18 → 2027-02-25 (+7d) |
| PO | **Issuance of Purchase Orders** | 2026-11-04 → 2026-11-11 (+7d) | 2026-11-17 → 2026-11-24 (+7d) |
| 1 | **Main Line Pipes** | 2026-11-04 → 2026-11-11 (+7d) | 2026-11-17 → 2026-11-24 (+7d) |
| PRO-IR-PO-140 | Issuance of Purchase Order for Softscape and Planting Works | 2026-11-04 → 2026-11-11 (+7d) | 2026-11-10 → 2026-11-17 (+7d) |
| PRO-IR-PO-150 | Issuance of Purchase Order for Site Furnishings (Seating Bench,Stone Boulders and Gravel) | 2026-11-11 → 2026-11-18 (+7d) | 2026-11-17 → 2026-11-24 (+7d) |
| MF | **Manufacturing of Material** | 2026-11-11 → 2026-11-18 (+7d) | 2027-01-26 → 2027-02-02 (+7d) |
| 1 | **Main Line Pipes** | 2026-11-11 → 2026-11-18 (+7d) | 2027-01-26 → 2027-02-02 (+7d) |
| PRO-IR-MF-140 | Manufacturing of Softscape and Planting Works | 2026-11-11 → 2026-11-18 (+7d) | 2027-01-19 → 2027-01-26 (+7d) |
| PRO-IR-MF-150 | Manufacturing of Valves for Site Furnishings (Seating Bench,Stone Boulders and Gravel) | 2026-11-18 → 2026-11-25 (+7d) | 2027-01-26 → 2027-02-02 (+7d) |
| 1DL | **1st Material Delivery & Site Inspection** | 2027-01-20 → 2027-01-27 (+7d) | 2027-02-02 → 2027-02-09 (+7d) |

| ID | Task | Start | Finish | Complete |
| --- | --- | --- | --- | --- |
| 1 | **Main Line Pipes** | 2027-01-20 → 2027-01-27 (+7d) | 2027-02-02 → 2027-02-09 (+7d) |  |
| PRO-IR-1DL-140 | 1ST Material Delivery for Softscape and Planting Works | 2027-01-20 → 2027-01-27 (+7d) | 2027-01-26 → 2027-02-02 (+7d) |  |
| PRO-IR-1DL-150 | 1ST Material Delivery for Site Furnishings (Seating Bench,Stone Boulders and Gravel) | 2027-01-27 → 2027-02-03 (+7d) | 2027-02-02 → 2027-02-09 (+7d) |  |
| DL | **Material Delivery & Site Inspection** | 2027-01-27 → 2027-02-03 (+7d) | 2027-02-18 → 2027-02-25 (+7d) |  |
| 1 | **Main Line Pipes** | 2027-01-27 → 2027-02-03 (+7d) | 2027-02-18 → 2027-02-25 (+7d) |  |
| PRO-R25-IR-DL-140 | Material Delivery & Site Inspection of Softscape and Planting Works | 2027-01-27 → 2027-02-03 (+7d) | 2027-02-07 → 2027-02-14 (+7d) |  |
| PRO-R25-IR-DL-150 | Material Delivery & Site Inspection of Site Furnishings (Seating Bench,Stone Boulders and Gravel) | 2027-02-08 → 2027-02-15 (+7d) | 2027-02-18 → 2027-02-25 (+7d) |  |
| LL | **Long Lead Time Items** | 2026-11-04 → 2026-11-11 (+7d) | 2027-06-13 → 2027-06-20 (+7d) |  |
| 1 | **Superstructure Works** | 2026-11-04 → 2026-11-11 (+7d) | 2027-06-13 → 2027-06-20 (+7d) |  |
| SL | **Sewage Pump Station** | 2026-11-04 → 2026-11-11 (+7d) | 2027-04-29 → 2027-05-06 (+7d) |  |
| 1 | **Issuance of Purchase Orders** | 2026-11-04 → 2026-11-11 (+7d) | 2026-11-10 → 2026-11-17 (+7d) |  |
| PRO-SPS-LL-PO-10 | Issuance of Purchase Order for Electromechanical Works for Pump Station | 2026-11-04 → 2026-11-11 (+7d) | 2026-11-10 → 2026-11-17 (+7d) |  |
| 2 | **Manufacturing of Material** | 2026-11-11 → 2026-11-18 (+7d) | 2027-03-07 → 2027-03-17 (+10d) |  |
| PRO-SPS-LL-MF-10 | Manufacturing of Electromechanical Works for Pump Station | 2026-11-11 → 2026-11-18 (+7d) | 2027-03-07 → 2027-03-17 (+10d) |  |
| 3 | **Material Shipping/Custom Clearance/Delivery** | 2027-03-08 → 2027-03-18 (+10d) | 2027-04-04 → 2027-04-11 (+7d) |  |
| PRO-SPS-LL-SH/DL-10 | Material Delivery for Electromechanical Works for Pump Station | 2027-03-08 → 2027-03-18 (+10d) | 2027-04-04 → 2027-04-11 (+7d) |  |
| 4 | **Material Site Inspection** | 2027-04-05 → 2027-04-12 (+7d) | 2027-04-29 → 2027-05-06 (+7d) |  |
| PRO-SPS-LL-MSI-10 | Material Site Inspection for Electromechanical Works for Pump Station | 2027-04-05 → 2027-04-12 (+7d) | 2027-04-29 → 2027-05-06 (+7d) |  |
| SL1 | **Water Pump Station** | 2026-11-11 → 2026-11-18 (+7d) | 2027-04-01 → 2027-04-08 (+7d) |  |
| 1 | **Issuance of Purchase Orders** | 2026-11-11 → 2026-11-18 (+7d) | 2026-11-18 → 2026-11-25 (+7d) |  |
| PRO-LS-LL-PO-20 | Issuance of Purchase Order for Electromechanical Works for Water Pump Station | 2026-11-11 → 2026-11-18 (+7d) | 2026-11-18 → 2026-11-25 (+7d) |  |
| 2 | **Manufacturing of Material** | 2026-11-19 → 2026-11-26 (+7d) | 2027-02-08 → 2027-02-15 (+7d) |  |
| PRO-LS-LL-MF-20 | Manufacturing of Electromechanical Works for Water Pump Station | 2026-11-19 → 2026-11-26 (+7d) | 2027-02-08 → 2027-02-15 (+7d) |  |
| 3 | **Material Shipping/Custom Clearance/Delivery** | 2027-02-09 → 2027-02-16 (+7d) | 2027-03-04 → 2027-03-15 (+11d) |  |
| PRO-LS-LL-SH/DL-20 | Material Delivery for Electromechanical Works for Water Pump Station | 2027-02-09 → 2027-02-16 (+7d) | 2027-03-04 → 2027-03-15 (+11d) |  |
| 4 | **Material Site Inspection** | 2027-03-06 → 2027-03-16 (+10d) | 2027-04-01 → 2027-04-08 (+7d) |  |
| PRO-LS-LL-MSI-20 | Material Site Inspection for Electromechanical Works for Water Pump Station | 2027-03-06 → 2027-03-16 (+10d) | 2027-04-01 → 2027-04-08 (+7d) |  |
| SL2 | **Storage Tank (TSE)** | 2026-11-19 → 2026-11-26 (+7d) | 2027-06-13 → 2027-06-20 (+7d) |  |
| 1 | **Issuance of Purchase Orders** | 2026-11-19 → 2026-11-26 (+7d) | 2026-11-26 → 2026-12-03 (+7d) |  |
| PRO-TSE-LL-PO-30 | Issuance of Purchase Order for Electromechanical Works for Storage Tank (TSE) | 2026-11-19 → 2026-11-26 (+7d) | 2026-11-26 → 2026-12-03 (+7d) |  |
| 2 | **Manufacturing of Material** | 2026-11-28 → 2026-12-05 (+7d) | 2027-04-19 → 2027-04-26 (+7d) |  |
| PRO-TSE-LL-MF-30 | Manufacturing of Electromechanical Works for Storage Tank (TSE) | 2026-11-28 → 2026-12-05 (+7d) | 2027-04-19 → 2027-04-26 (+7d) |  |
| 3 | **Material Shipping/Custom Clearance/Delivery** | 2027-04-20 → 2027-04-27 (+7d) | 2027-05-13 → 2027-05-26 (+13d) |  |
| PRO-TSE-LL-SH/DL-30 | Material Delivery for Electromechanical Works for Storage Tank (TSE) | 2027-04-20 → 2027-04-27 (+7d) | 2027-05-13 → 2027-05-26 (+13d) |  |
| 4 | **Material Site Inspection** | 2027-05-20 → 2027-05-27 (+7d) | 2027-06-13 → 2027-06-20 (+7d) |  |
| PRO-TSE-LL-MSI-30 | Material Site Inspection for Electromechanical Works for Storage Tank (TSE) | 2027-05-20 → 2027-05-27 (+7d) | 2027-06-13 → 2027-06-20 (+7d) |  |
| CON | **Construction Works** |  | 2027-06-16 → 2027-06-23 (+7d) |  |
| INF | **Infrastructure Networks** |  | 2027-06-14 → 2027-06-21 (+7d) |  |
| IN | **Internal** |  | 2027-06-14 → 2027-06-21 (+7d) |  |
| 1 | **Alignment-RD-01** |  | 2027-05-25 → 2027-06-01 (+7d) |  |
| EW | **Earthworks** |  | 2026-12-30 → 2027-01-06 (+7d) |  |
| EW | **Earthworks** |  | 2026-12-30 → 2027-01-06 (+7d) |  |
| CO-EW-210_R01 | Excavation and Backfilling Works Upto Design Level for Earthworks for Alignment-RD-01(Remaining)-part1 |  | 2026-12-30 → 2027-01-06 (+7d) |  |
| SD | **Storm Drainage Network** | 2026-10-19 → 2026-10-20 (+1d) | 2026-12-28 → 2027-01-04 (+7d) |  |
| MH | **Manholes** | 2026-10-19 → 2026-10-26 (+7d) | 2026-12-05 → 2026-12-12 (+7d) |  |
| CO-SD-MH-230 | Trench Excavation and Bedding Works for Manholes of Storm Drainage Network for Alignment-RD-01 | 2026-10-19 → 2026-10-26 (+7d) | 2026-11-01 → 2026-11-08 (+7d) |  |
| CO-SD-MH-240 | Install RC Footing Works for Manholes of Storm Drainage Network for Alignment-RD-01 | 2026-11-05 → 2026-11-12 (+7d) | 2026-11-15 → 2026-11-22 (+7d) |  |
| CO-SD-MH-250 | Install RC Wall Rings & Slab Works for Manholes of Storm Drainage Network for Alignment-RD-01 | 2026-11-16 → 2026-11-23 (+7d) | 2026-11-23 → 2026-11-30 (+7d) |  |
| CO-SD-MH-260 | Backfilling Works for Manholes of Storm Drainage Network for Alignment-RD-01 | 2026-11-24 → 2026-12-01 (+7d) | 2026-12-05 → 2026-12-12 (+7d) |  |
| ML | **Main Line Sections** | 2026-11-16 → 2026-10-20 (-27d) | 2026-12-12 → 2026-12-19 (+7d) |  |
| CO-SD-ML-140 | Trench Excavation and Bedding Works for Main Lines of Storm Drainage Network for Alignment-RD-01 | 2026-11-16 → 2026-10-20 A (-27d) | 2026-11-24 → 2026-12-01 (+7d) |  |
| CO-SD-ML-150 | Pipes Laying Works for Main Lines of Storm Drainage Network for Alignment-RD-01 | 2026-11-24 → 2026-10-20 A (-35d) | 2026-12-02 → 2026-12-09 (+7d) | 0% → 5% |
| CO-SD-ML-160 | Trench Backfilling and Compaction Works for Main Lines of Storm Drainage Network for Alignment-RD-01 | 2026-12-03 → 2026-10-20 A (-44d) | 2026-12-12 → 2026-12-19 (+7d) |  |
| CB | **Catch Basin Sections** | 2026-12-03 → 2026-12-10 (+7d) | 2026-12-28 → 2027-01-04 (+7d) |  |
| CO-SD-CB-180 | Trench Excavation and Bedding Works for Catch Basins of Storm Drainage Network for Alignment-RD-01 | 2026-12-03 → 2026-12-10 (+7d) | 2026-12-12 → 2026-12-19 (+7d) |  |
| CO-SD-CB-190 | Installation and Pipes Laying Connection Works for Catch Basins of Storm Drainage Network for Alignment-RD-01 | 2026-12-13 → 2026-12-20 (+7d) | 2026-12-20 → 2026-12-27 (+7d) |  |
| CO-SD-CB-200 | Trench Backfilling and Compaction Works for Catch Basins of Storm Drainage Network for Alignment-RD-01 | 2026-12-21 → 2026-12-28 (+7d) | 2026-12-28 → 2027-01-04 (+7d) |  |
| SW | **Sewage Network** | 2026-12-13 → 2026-12-20 (+7d) | 2027-02-20 → 2027-02-27 (+7d) |  |
| 1 | **Manholes** | 2026-12-13 → 2026-12-20 (+7d) | 2027-02-20 → 2027-02-27 (+7d) |  |
| CO-SW-MH-210 | Excavation Works for Main Line Manholes of Sewage Network for Alignment-RD-01 | 2026-12-13 → 2026-12-20 (+7d) | 2026-12-26 → 2027-01-02 (+7d) |  |
| CO-SW-MH-220 | Installation RC Footing Works for Main Line Manholes of Sewage Network for Alignment-RD-01 | 2026-12-27 → 2027-01-03 (+7d) | 2027-01-09 → 2027-01-16 (+7d) |  |
| CO-SW-MH-230 | Install Grp Liner Wall Works for Main Line Manholes of Sewage Network for Alignment-RD-01 | 2027-01-10 → 2027-01-17 (+7d) | 2027-01-23 → 2027-01-30 (+7d) |  |
| CO-SW-MH-240 | Pouring Grp Liner Wall Works for Main Line Manholes of Sewage Network for Alignment-RD-01 | 2027-01-24 → 2027-01-31 (+7d) | 2027-02-06 → 2027-02-13 (+7d) |  |
| CO-SW-MH-250 | Backfilling Works for Main Line Manholes of Sewage Network for Alignment-RD-01 | 2027-02-07 → 2027-02-14 (+7d) | 2027-02-20 → 2027-02-27 (+7d) |  |
| ML | **Main Line Sections** | 2026-12-29 → 2027-01-05 (+7d) | 2027-02-20 → 2027-02-27 (+7d) |  |
| CO-SW-ML-140 | Trench Excavation and Bedding Works for Main Lines of Sewage Network for Alignment-RD-01 | 2026-12-29 → 2027-01-05 (+7d) | 2027-01-06 → 2027-01-13 (+7d) |  |
| CO-SW-ML-150 | Pipes Laying Works for Main Lines of Sewage Network for Alignment-RD-01 | 2027-01-07 → 2027-01-14 (+7d) | 2027-01-16 → 2027-01-23 (+7d) |  |
| CO-SW-ML-160 | Trench Backfilling and Compaction Works for Main Lines of Sewage Network for Alignment-RD-01 | 2027-02-14 → 2027-02-21 (+7d) | 2027-02-20 → 2027-02-27 (+7d) |  |
| TSE | **Treated Sewage Effluent (Tse)** | 2026-12-06 → 2026-12-13 (+7d) | 2027-01-23 → 2027-01-30 (+7d) |  |
| CO-TSE-ML-200 | Trench Excavation and Bedding Works for Main Lines of Treated Sewage Effluent (Tse) for Alignment-RD-01 | 2026-12-06 → 2026-12-13 (+7d) | 2026-12-13 → 2026-12-20 (+7d) |  |

| ID | Task | Start | Finish |
| --- | --- | --- | --- |
| CO-TSE-ML-210 | Pipes Laying Works for Main Lines of Treated Sewage Effluent (Tse) for Alignment-RD-01 | 2026-12-19 → 2026-12-26 (+7d) | 2027-01-06 → 2027-01-13 (+7d) |
| CO-TSE-ML-230 | Trench Backfilling and Compaction Works for Treated Sewage Effluent (Tse) for Alignment-RD-01 | 2027-01-07 → 2027-01-14 (+7d) | 2027-01-23 → 2027-01-30 (+7d) |
| PW | **Potable Water Network** | 2026-12-06 → 2026-12-13 (+7d) | 2027-01-11 → 2027-01-18 (+7d) |
| ML | **Main Line Sections** | 2026-12-06 → 2026-12-13 (+7d) | 2027-01-11 → 2027-01-18 (+7d) |
| CO-PW-ML-140 | Trench Excavation and Bedding Works for Main Lines of Potable Water Network for Alignment-RD-01 | 2026-12-06 → 2026-12-13 (+7d) | 2026-12-12 → 2026-12-19 (+7d) |
| CO-PW-ML-150 | Pipes Laying and accessories for Main Lines of Potable Water Network for Alignment-RD-01 | 2026-12-29 → 2027-01-05 (+7d) | 2027-01-04 → 2027-01-11 (+7d) |
| CO-PW-ML-160 | Trench Backfilling and Compaction Works for Main Lines of Potable Water Network for Alignment-RD-01 | 2027-01-05 → 2027-01-12 (+7d) | 2027-01-11 → 2027-01-18 (+7d) |
| VC | **Valve Chamber** | 2026-12-08 → 2026-12-15 (+7d) | 2027-01-11 → 2027-01-18 (+7d) |
| CO-PW-VC-230 | Excavation Works for Main Line Valves and Valve Chambers of Potable Water Network for Alignment-RD-01 | 2026-12-08 → 2026-12-15 (+7d) | 2026-12-12 → 2026-12-19 (+7d) |
| CO-PW-VC190 | Installation of Valve Chambers of Potable Water Network for Alignment-RD-01 | 2026-12-13 → 2026-12-20 (+7d) | 2026-12-16 → 2026-12-23 (+7d) |
| CO-PW-VC-240 | Installation Works for Valves of Potable Water Network for Alignment-RD-01 | 2026-12-17 → 2026-12-24 (+7d) | 2026-12-21 → 2026-12-28 (+7d) |
| CO-PW-VC-250 | Backfilling Works for Main Line Valves and Valve Chambers of Potable Water Network for Alignment-RD-01 | 2027-01-07 → 2027-01-14 (+7d) | 2027-01-11 → 2027-01-18 (+7d) |
| FH | **Fire Hydrant** | 2026-12-13 → 2026-12-20 (+7d) | 2027-01-11 → 2027-01-18 (+7d) |
| CO-PW-FH-170 | Excavation Works for Fire Hydrants of Potable Water Network for Alignment-RD-01 | 2026-12-13 → 2026-12-20 (+7d) | 2026-12-29 → 2027-01-05 (+7d) |
| CO-PW-FH-180 | Installation Works for Fire Hydrant of Potable Water Network for Alignment-RD-01 | 2027-01-05 → 2027-01-12 (+7d) | 2027-01-07 → 2027-01-14 (+7d) |
| CO-PW-FH-190 | Trench Backfilling and Compaction Works for Fire Hydrants of Potable Water Network for Alignment-RD-01 | 2027-01-09 → 2027-01-16 (+7d) | 2027-01-11 → 2027-01-18 (+7d) |
| IR | **Irrigation Network** | 2027-01-24 → 2027-01-31 (+7d) | 2027-03-06 → 2027-03-16 (+10d) |
| ML | **Main Line Pipes** | 2027-01-24 → 2027-01-31 (+7d) | 2027-03-06 → 2027-03-16 (+10d) |
| CO-IR-ML-150 | Trench Excavation and Bedding Works for Main Lines of Irrigation Network for Alignment-RD-01 | 2027-01-24 → 2027-01-31 (+7d) | 2027-01-31 → 2027-02-07 (+7d) |
| CO-IR-ML-160 | Pipes Laying Works for Main Lines of Irrigation Network for Alignment-RD-01 | 2027-02-01 → 2027-02-08 (+7d) | 2027-02-09 → 2027-02-16 (+7d) |
| CO-IR-ML-170 | Installation Works for Main Line Valves of Irrigation Network for Alignment-RD-01 | 2027-02-10 → 2027-02-17 (+7d) | 2027-02-17 → 2027-02-24 (+7d) |
| CO-IR-ML-190 | Installation Works for Bulbblers And Sprinklers and Irrigation Control System of Irrigation Network for Alignment-RD-01 | 2027-02-18 → 2027-02-25 (+7d) | 2027-03-01 → 2027-03-08 (+7d) |
| CO-IR-ML-180 | Trench Backfilling and Compaction Works for Main Lines of Irrigation Network for Alignment-RD-01 | 2027-03-02 → 2027-03-13 (+11d) | 2027-03-06 → 2027-03-16 (+10d) |
| MV | **Medium Voltage Network** | 2027-02-21 → 2027-02-28 (+7d) | 2027-03-16 → 2027-03-23 (+7d) |
| CW | **Cabling Works** | 2027-02-21 → 2027-02-28 (+7d) | 2027-03-16 → 2027-03-23 (+7d) |
| CO-MV-ML-280 | Trench Excavation and Bedding Works for Medium Voltage Network for Alignment-RD-01 | 2027-02-21 → 2027-02-28 (+7d) | 2027-02-27 → 2027-03-06 (+7d) |
| CO-MV-ML-290 | Duct Laying Works for Medium Voltage Network for Alignment-RD-01 | 2027-02-28 → 2027-03-07 (+7d) | 2027-03-06 → 2027-03-16 (+10d) |
| CO-MV-ML-300 | Trench Backfilling and Compaction Works for Medium Voltage Network for Alignment-RD-01 | 2027-03-07 → 2027-03-17 (+10d) | 2027-03-16 → 2027-03-23 (+7d) |
| LV | **Low Voltage Network** | 2027-03-17 → 2027-03-24 (+7d) | 2027-04-14 → 2027-04-21 (+7d) |
| MLVC | **Main Low Voltage Cables Works ( Cable 300 MM )** | 2027-03-17 → 2027-03-24 (+7d) | 2027-04-06 → 2027-04-13 (+7d) |
| CON-LV-ML-130 | Trench Excavation and Bedding Works for Main Cable of Low Voltage Network for Alignment-RD-01 | 2027-03-17 → 2027-03-24 (+7d) | 2027-03-23 → 2027-03-30 (+7d) |
| CON-LV-ML-140 | Cable Laying Works for Main Cable of Low Voltage Network for Alignment-RD-01 | 2027-03-24 → 2027-03-31 (+7d) | 2027-03-30 → 2027-04-06 (+7d) |
| CON-LV-ML-150 | Trench Backfilling and Compaction Works for Main Cable of Low Voltage Network for Alignment-RD-01 | 2027-03-31 → 2027-04-07 (+7d) | 2027-04-06 → 2027-04-13 (+7d) |
| SLVC | **Service Low Voltage Cables Works ( Cable 70 MM )** | 2027-03-24 → 2027-03-31 (+7d) | 2027-04-14 → 2027-04-21 (+7d) |
| CON-LV-HC-130 | Trench Excavation and Bedding Works for Service Cable of Low Voltage Network for Alignment-RD-01 | 2027-03-24 → 2027-03-31 (+7d) | 2027-03-30 → 2027-04-06 (+7d) |
| CON-LV-HC-140 | Cable Laying Works for Service Cable of Low Voltage Network for Alignment-RD-01 | 2027-03-31 → 2027-04-07 (+7d) | 2027-04-07 → 2027-04-14 (+7d) |
| CON-LV-HC-150 | Trench Backfilling and Compaction Works for Service Cable of Low Voltage Network for Alignment-RD-01 | 2027-04-08 → 2027-04-15 (+7d) | 2027-04-14 → 2027-04-21 (+7d) |
| DP | **Distribution Pillars Works** | 2027-03-24 → 2027-03-31 (+7d) | 2027-03-31 → 2027-04-07 (+7d) |
| CON-LV-DP-130 | Foundation Excavation Works for Distribution Pillars of Low Voltage Network for Alignment-RD-01 | 2027-03-24 → 2027-03-31 (+7d) | 2027-03-31 → 2027-04-07 (+7d) |
| SL | **Street Lighting Network** | 2027-02-28 → 2027-03-07 (+7d) | 2027-03-29 → 2027-04-05 (+7d) |
| LP | **Lighting Poles Works** | 2027-02-28 → 2027-03-07 (+7d) | 2027-03-24 → 2027-03-31 (+7d) |
| CO-SL-LP-350 | Installation Works for Lighting Poles Foundation of Street Lighting Network for Alignment-RD-01 | 2027-02-28 → 2027-03-07 (+7d) | 2027-03-08 → 2027-03-18 (+10d) |
| CO-SL-LP-360 | Installation Works for Lighting Poles of Street Lighting Network for Alignment-RD-01 | 2027-03-13 → 2027-03-20 (+7d) | 2027-03-17 → 2027-03-24 (+7d) |
| CO-SL-LP-380 | Backfilling Works for Lighting Poles of Street Lighting Network for Alignment-RD-01 | 2027-03-18 → 2027-03-25 (+7d) | 2027-03-24 → 2027-03-31 (+7d) |
| CW | **Cabling Works** | 2027-03-18 → 2027-03-25 (+7d) | 2027-03-29 → 2027-04-05 (+7d) |
| CO-SL-CL-290 | Cable Laying Works for Street Lighting Network for Alignment-RD-01 | 2027-03-18 → 2027-03-25 (+7d) | 2027-03-23 → 2027-03-30 (+7d) |
| CO-SL-CL-300 | Trench Backfilling and Compaction Works for Street Lighting Network for Alignment-RD-01 | 2027-03-24 → 2027-03-31 (+7d) | 2027-03-29 → 2027-04-05 (+7d) |
| TE | **Telecom and Light Current Network** | 2027-03-30 → 2027-04-06 (+7d) | 2027-04-22 → 2027-04-29 (+7d) |
| PD | **Ducts Works** | 2027-04-15 → 2027-04-22 (+7d) | 2027-04-22 → 2027-04-29 (+7d) |
| CO-TE-DW-150 | Pipes Laying Works for Ducts of Telecom Network for Alignment-RD-01 | 2027-04-15 → 2027-04-22 (+7d) | 2027-04-19 → 2027-04-26 (+7d) |
| CO-TE-DW-160 | Trench Backfilling and Compaction Works for Ducts of Telecom Network for Alignment-RD-01 | 2027-04-20 → 2027-04-27 (+7d) | 2027-04-22 → 2027-04-29 (+7d) |
| MH | **Manholes Works** | 2027-03-30 → 2027-04-06 (+7d) | 2027-04-07 → 2027-04-14 (+7d) |
| CO-TE-MH-170 | Excavation Works for Manholes of Telecom Network for Alignment-RD-01 | 2027-03-30 → 2027-04-06 (+7d) | 2027-04-03 → 2027-04-10 (+7d) |
| CO-TE-MH-180 | Installation Works for Manholes of Telecom Network for Alignment-RD-01 | 2027-03-30 → 2027-04-06 (+7d) | 2027-04-03 → 2027-04-10 (+7d) |
| CO-TE-MH-190 | Backfilling Works for Manholes of Telecom Network for Alignment-RD-01 | 2027-04-04 → 2027-04-11 (+7d) | 2027-04-07 → 2027-04-14 (+7d) |
| DD | **CCTV, Telephone, MSN, ACs System Works** | 2027-04-08 → 2027-04-15 (+7d) | 2027-04-17 → 2027-04-24 (+7d) |
| CO-TE-CTV-150 | Installation of CCTV, Telephone, ACS and MSN Systems Cables for Alignment-RD-01 | 2027-04-08 → 2027-04-15 (+7d) | 2027-04-17 → 2027-04-24 (+7d) |
| RD | **Road Network** | 2027-04-24 → 2027-05-01 (+7d) | 2027-05-04 → 2027-05-11 (+7d) |
| LS | **Pavement Works** | 2027-04-24 → 2027-05-01 (+7d) | 2027-05-04 → 2027-05-11 (+7d) |
| CO-RD-PV-180 | Fixing of Curbstone for Sidewalks Pavement for Alignment-RD-01 | 2027-04-24 → 2027-05-01 (+7d) | 2027-05-04 → 2027-05-11 (+7d) |
| CO-RD-PV-190 | Fixing of Interlock Tiles for Sidewalks Pavement for Alignment-RD-01 | 2027-04-24 → 2027-05-01 (+7d) | 2027-05-04 → 2027-05-11 (+7d) |
| TS | **Traffic Signs Boards and Roads Marking** | 2027-04-24 → 2027-05-01 (+7d) | 2027-05-02 → 2027-05-09 (+7d) |
| CO-RD-F-RM-190 | Application of Road Marking Works For Road Works for Alignment-RD-01 | 2027-04-24 → 2027-05-01 (+7d) | 2027-04-27 → 2027-05-04 (+7d) |
| CO-RD-F-TS-130 | Installation Works of Traffic Signs Boards For Road Works for Alignment-RD-01 | 2027-04-28 → 2027-05-05 (+7d) | 2027-05-02 → 2027-05-09 (+7d) |
| 3 | **Finishes for Infrastructure Networks** | 2027-03-17 → 2027-03-24 (+7d) | 2027-05-25 → 2027-06-01 (+7d) |
| 11 | **Storm Drainage Network** | 2027-04-24 → 2027-05-01 (+7d) | 2027-05-25 → 2027-06-01 (+7d) |
| TF | **Testing and Finishes** | 2027-04-24 → 2027-05-01 (+7d) | 2027-05-25 → 2027-06-01 (+7d) |
| CO-SD-CB-TF-190 | Catch Basin Internal Finishes (Benching ) for Storm Drainage Network for Alignment-RD-01 | 2027-04-24 → 2027-05-01 (+7d) | 2027-04-29 → 2027-05-06 (+7d) |
| CO-SD-ML-TF-110 | Testing Work for Pipes of Storm Drainage Network for Alignment-RD-01 | 2027-05-01 → 2027-05-08 (+7d) | 2027-05-02 → 2027-05-09 (+7d) |
| CO-SD-MH-TF-230 | Testing Works for Manholes of Storm Drainage Network for Alignment-RD-01 | 2027-05-03 → 2027-05-10 (+7d) | 2027-05-04 → 2027-05-11 (+7d) |

| ID | Task | Start | Finish |
| --- | --- | --- | --- |
| CO-SD-CB-TF-170 | Testing Works for Catch Basins of Storm Drainage Network for Alignment-RD-01 | 2027-05-05 → 2027-05-12 (+7d) | 2027-05-12 → 2027-05-25 (+13d) |
| CO-SD-CB-TF-180 | Install Catch Basin Cover Works for External Finishes of Storm Drainage Network for Alignment-RD-01 | 2027-05-13 → 2027-05-26 (+13d) | 2027-05-25 → 2027-06-01 (+7d) |
| 10 | **Sewage Network** | 2027-04-24 → 2027-05-01 (+7d) | 2027-05-01 → 2027-05-08 (+7d) |
| TF | **Testing and Finishes** | 2027-04-24 → 2027-05-01 (+7d) | 2027-05-01 → 2027-05-08 (+7d) |
| CO-SW-TF-250 | Testing Works for Main Line Manholes of Sewage Network for Alignment-RD-01 | 2027-04-24 → 2027-05-01 (+7d) | 2027-04-26 → 2027-05-03 (+7d) |
| CO-SW-TF-230 | Final Testing For Main Line of Sewage Network for Alignment-RD-01 | 2027-04-27 → 2027-05-04 (+7d) | 2027-05-01 → 2027-05-08 (+7d) |
| 9 | **Potable Water Network** | 2027-04-24 → 2027-05-01 (+7d) | 2027-05-02 → 2027-05-09 (+7d) |
| TF | **Testing and Finishes** | 2027-04-24 → 2027-05-01 (+7d) | 2027-05-02 → 2027-05-09 (+7d) |
| CO-PW-TF-140 | Fire Hydrant Finishies (S.Box + Safety + Marker Post ) of Potable Water Network for Alignment-RD-01 | 2027-04-24 → 2027-05-01 (+7d) | 2027-04-27 → 2027-05-04 (+7d) |
| CO-PW-TF-150 | Final Finishes works and Covers for Valves and Valve Chambers for Alignment-RD-01 | 2027-04-28 → 2027-05-05 (+7d) | 2027-04-29 → 2027-05-06 (+7d) |
| CO-PW-TF-220 | Testing of Potable Water Network for Alignment-RD-01 | 2027-05-01 → 2027-05-08 (+7d) | 2027-05-02 → 2027-05-09 (+7d) |
| 13 | **Irrigation Network** | 2027-05-03 → 2027-05-10 (+7d) | 2027-05-04 → 2027-05-11 (+7d) |
| TF | **Testing and Finishes** | 2027-05-03 → 2027-05-10 (+7d) | 2027-05-04 → 2027-05-11 (+7d) |
| CO-IR-TF-170 | Final Testing (pressure tests) of Irrigation Network for Alignment-RD-01 | 2027-05-03 → 2027-05-10 (+7d) | 2027-05-04 → 2027-05-11 (+7d) |
| 1 | **Treated Sewage Effluent (Tse)** | 2027-05-03 → 2027-05-10 (+7d) | 2027-05-04 → 2027-05-11 (+7d) |
| TF | **Testing and Finishes** | 2027-05-03 → 2027-05-10 (+7d) | 2027-05-04 → 2027-05-11 (+7d) |
| CO-TSE-TF-210 | Final Testing (pressure tests) of Treated Sewage Effluent (Tse) for Alignment-RD-01 | 2027-05-03 → 2027-05-10 (+7d) | 2027-05-04 → 2027-05-11 (+7d) |
| 14 | **Medium Voltage Network** | 2027-03-17 → 2027-03-24 (+7d) | 2027-03-18 → 2027-03-25 (+7d) |
| TT | **Termination and Testing Works** | 2027-03-17 → 2027-03-24 (+7d) | 2027-03-18 → 2027-03-25 (+7d) |
| CO-MV-TF-230 | Testing and Termination Works of Medium Voltage Network for Alignment-RD-01 | 2027-03-17 → 2027-03-24 (+7d) | 2027-03-18 → 2027-03-25 (+7d) |
| 6 | **Low Voltage Network** | 2027-04-15 → 2027-04-22 (+7d) | 2027-04-19 → 2027-04-26 (+7d) |
| TT | **Termination and Testing Works** | 2027-04-15 → 2027-04-22 (+7d) | 2027-04-19 → 2027-04-26 (+7d) |
| CON-LV-TT-120 | Testing and Termination Works for Substation Low Voltage Panel Boards of Low Voltage Network for Alignment-RD-01 | 2027-04-15 → 2027-04-22 (+7d) | 2027-04-19 → 2027-04-26 (+7d) |
| 12 | **Street Lighting Network** | 2027-03-30 → 2027-04-06 (+7d) | 2027-04-25 → 2027-05-02 (+7d) |
| TR | **Termination and Testing Works** | 2027-03-30 → 2027-04-06 (+7d) | 2027-04-25 → 2027-05-02 (+7d) |
| CO-SL-LP-370 | Installation Works for Lighting Fixtures With Drop Wire of Street Lighting Network for Alignment-RD-01 | 2027-03-30 → 2027-04-06 (+7d) | 2027-04-05 → 2027-04-12 (+7d) |
| CO-SL-TF-410 | Testing Works for Lighting Poles of Street Lighting Network for Alignment-RD-01 | 2027-04-22 → 2027-04-29 (+7d) | 2027-04-25 → 2027-05-02 (+7d) |
| ES | **Earthing System Works** | 2027-04-17 → 2027-04-24 (+7d) | 2027-04-21 → 2027-04-28 (+7d) |
| CO-SL-ES-240 | Install Earthing System Works for Lighting Poles of Street Lighting Network for Alignment-RD-01 | 2027-04-17 → 2027-04-24 (+7d) | 2027-04-19 → 2027-04-26 (+7d) |
| CO-SL-ES-250 | Install Earthing System Works for Lighting Panel Boards of Street Lighting Network for Alignment-RD-01 | 2027-04-20 → 2027-04-27 (+7d) | 2027-04-21 → 2027-04-28 (+7d) |
| 3 | **Telecom and Light Current Network** | 2027-04-24 → 2027-05-01 (+7d) | 2027-04-29 → 2027-05-06 (+7d) |
| 1 | **Testing and Finishes** | 2027-04-24 → 2027-05-01 (+7d) | 2027-04-29 → 2027-05-06 (+7d) |
| CO-TE-CTV-TF-180 | Testing and Interface modules with Telecom for Alignment-RD-01 | 2027-04-24 → 2027-05-01 (+7d) | 2027-04-26 → 2027-05-03 (+7d) |
| CO-TE-CTV-TF-310 | Testing and Interface modules with CCTV, Telephone, MSN and Access Control for Alignment-RD-01 | 2027-04-27 → 2027-05-04 (+7d) | 2027-04-29 → 2027-05-06 (+7d) |
| 5 | **Alignment-RD-02** | 2026-11-15 → 2026-11-22 (+7d) | 2027-06-14 → 2027-06-21 (+7d) |
| EW | **Earthworks** | 2026-11-15 → 2026-11-22 (+7d) | 2026-11-28 → 2026-12-05 (+7d) |
| EW | **Earthworks** | 2026-11-15 → 2026-11-22 (+7d) | 2026-11-28 → 2026-12-05 (+7d) |
| CO-EW-220 | Excavation and Backfilling Works Upto Design Level for Earthworks for Alignment-RD-02 | 2026-11-15 → 2026-11-22 (+7d) | 2026-11-28 → 2026-12-05 (+7d) |
| SD | **Storm Drainage Network** | 2026-11-29 → 2026-12-06 (+7d) | 2027-03-20 → 2027-03-27 (+7d) |
| MH | **Manholes** | 2026-11-29 → 2026-12-06 (+7d) | 2026-12-13 → 2026-12-20 (+7d) |
| CO-SD-MH-270 | Trench Excavation and Bedding Works for Manholes of Storm Drainage Network for Alignment-RD-02 | 2026-11-29 → 2026-12-06 (+7d) | 2026-12-02 → 2026-12-09 (+7d) |
| CO-SD-MH-280 | Install RC Footing Works for Manholes of Storm Drainage Network for Alignment-RD-02 | 2026-12-03 → 2026-12-10 (+7d) | 2026-12-06 → 2026-12-13 (+7d) |
| CO-SD-MH-290 | Install RC Wall Rings & Slab Works for Manholes of Storm Drainage Network for Alignment-RD-02 | 2026-12-07 → 2026-12-14 (+7d) | 2026-12-09 → 2026-12-16 (+7d) |
| CO-SD-MH-300 | Backfilling Works for Manholes of Storm Drainage Network for Alignment-RD-02 | 2026-12-10 → 2026-12-17 (+7d) | 2026-12-13 → 2026-12-20 (+7d) |
| ML | **Main Line Sections** | 2026-12-10 → 2026-12-17 (+7d) | 2026-12-20 → 2026-12-27 (+7d) |
| CO-SD-ML-170 | Trench Excavation and Bedding Works for Main Lines of Storm Drainage Network for Alignment-RD-02 | 2026-12-10 → 2026-12-17 (+7d) | 2026-12-13 → 2026-12-20 (+7d) |
| CO-SD-ML-180 | Pipes Laying Works for Main Lines of Storm Drainage Network for Alignment-RD-02 | 2026-12-14 → 2026-12-21 (+7d) | 2026-12-16 → 2026-12-23 (+7d) |
| CO-SD-ML-190 | Trench Backfilling and Compaction Works for Main Lines of Storm Drainage Network for Alignment-RD-02 | 2026-12-17 → 2026-12-24 (+7d) | 2026-12-20 → 2026-12-27 (+7d) |
| CB | **Catch Basin Sections** | 2026-12-21 → 2026-12-28 (+7d) | 2027-03-20 → 2027-03-27 (+7d) |
| CO-SD-CB-210 | Trench Excavation and Bedding Works for Catch Basins of Storm Drainage Network for Alignment-RD-02 | 2026-12-21 → 2026-12-28 (+7d) | 2027-01-10 → 2027-01-17 (+7d) |
| CO-SD-CB-220 | Installation and Pipes Laying Connection Works for Catch Basins of Storm Drainage Network for Alignment-RD-02 | 2027-01-11 → 2027-01-18 (+7d) | 2027-02-01 → 2027-02-08 (+7d) |
| CO-SD-CB-230 | Trench Backfilling and Compaction Works for Catch Basins of Storm Drainage Network for Alignment-RD-02 | 2027-03-15 → 2027-03-22 (+7d) | 2027-03-20 → 2027-03-27 (+7d) |
| SW | **Sewage Network** | 2026-12-21 → 2026-12-28 (+7d) | 2027-02-25 → 2027-03-04 (+7d) |
| 1 | **Manholes** | 2026-12-21 → 2026-12-28 (+7d) | 2027-02-25 → 2027-03-04 (+7d) |
| CO-SW-MH-260 | Excavation Works for Main Line Manholes of Sewage Network for Alignment-RD-02 | 2026-12-21 → 2026-12-28 (+7d) | 2027-01-02 → 2027-01-09 (+7d) |
| CO-SW-MH-270 | Installation RC Footing Works for Main Line Manholes of Sewage Network for Alignment-RD-02 | 2027-01-03 → 2027-01-10 (+7d) | 2027-01-14 → 2027-01-21 (+7d) |
| CO-SW-MH-280 | Install Grp Liner Wall Works for Main Line Manholes of Sewage Network for Alignment-RD-02 | 2027-01-16 → 2027-01-23 (+7d) | 2027-01-28 → 2027-02-04 (+7d) |
| CO-SW-MH-290 | Pouring Grp Liner Wall Works for Main Line Manholes of Sewage Network for Alignment-RD-02 | 2027-01-30 → 2027-02-06 (+7d) | 2027-02-11 → 2027-02-18 (+7d) |
| CO-SW-MH-300 | Backfilling Works for Main Line Manholes of Sewage Network for Alignment-RD-02 | 2027-02-13 → 2027-02-20 (+7d) | 2027-02-25 → 2027-03-04 (+7d) |
| ML | **Main Line Sections** | 2026-12-21 → 2026-12-28 (+7d) | 2027-02-25 → 2027-03-04 (+7d) |
| CO-SW-ML-170 | Trench Excavation and Bedding Works for Main Lines of Sewage Network for Alignment-RD-02 | 2026-12-21 → 2026-12-28 (+7d) | 2027-01-02 → 2027-01-09 (+7d) |
| CO-SW-ML-180 | Pipes Laying Works for Main Lines of Sewage Network for Alignment-RD-02 | 2027-01-03 → 2027-01-10 (+7d) | 2027-01-14 → 2027-01-21 (+7d) |
| CO-SW-ML-190 | Trench Backfilling and Compaction Works for Main Lines of Sewage Network for Alignment-RD-02 | 2027-02-14 → 2027-02-21 (+7d) | 2027-02-25 → 2027-03-04 (+7d) |
| TSE | **Treated Sewage Effluent (Tse)** | 2026-12-21 → 2026-12-28 (+7d) | 2027-02-06 → 2027-02-13 (+7d) |
| CO-TSE-ML-250 | Trench Excavation and Bedding Works for Main Lines of Treated Sewage Effluent (Tse) for Alignment-RD-02 | 2026-12-21 → 2026-12-28 (+7d) | 2027-01-03 → 2027-01-10 (+7d) |
| CO-TSE-ML-260 | Pipes Laying Works for Main Lines of Treated Sewage Effluent (Tse) for Alignment-RD-02 | 2027-01-04 → 2027-01-11 (+7d) | 2027-01-23 → 2027-01-30 (+7d) |
| CO-TSE-ML-280 | Trench Backfilling and Compaction Works for Treated Sewage Effluent (Tse) for Alignment-RD-02 | 2027-01-24 → 2027-01-31 (+7d) | 2027-02-06 → 2027-02-13 (+7d) |
| PW | **Potable Water Network** | 2027-02-07 → 2027-02-14 (+7d) | 2027-02-27 → 2027-03-06 (+7d) |
| ML | **Main Line Sections** | 2027-02-07 → 2027-02-14 (+7d) | 2027-02-25 → 2027-03-04 (+7d) |
| CO-PW-ML-170 | Trench Excavation and Bedding Works for Main Lines of Potable Water Network for Alignment-RD-02 | 2027-02-07 → 2027-02-14 (+7d) | 2027-02-11 → 2027-02-18 (+7d) |

| ID | Task | Start | Finish |
| --- | --- | --- | --- |
| CO-PW-ML-180 | Pipes Laying and accessories for Main Lines of Potable Water Network for Alignment-RD-02 | 2027-02-13 → 2027-02-20 (+7d) | 2027-02-20 → 2027-02-27 (+7d) |
| CO-PW-ML-190 | Trench Backfilling and Compaction Works for Main Lines of Potable Water Network for Alignment-RD-02 | 2027-02-21 → 2027-02-28 (+7d) | 2027-02-25 → 2027-03-04 (+7d) |
| VC | **Valve Chamber** | 2027-02-07 → 2027-02-14 (+7d) | 2027-02-27 → 2027-03-06 (+7d) |
| CO-PW-VC-260 | Excavation Works for Main Line Valves and Valve Chambers of Potable Water Network for Alignment-RD-02 | 2027-02-07 → 2027-02-14 (+7d) | 2027-02-11 → 2027-02-18 (+7d) |
| CO-PW-VC200 | Installation of Valve Chambers of Potable Water Network for Alignment-RD-02 | 2027-02-13 → 2027-02-20 (+7d) | 2027-02-15 → 2027-02-22 (+7d) |
| CO-PW-VC-270 | Installation Works for Valves of Potable Water Network for Alignment-RD-02 | 2027-02-16 → 2027-02-23 (+7d) | 2027-02-21 → 2027-02-28 (+7d) |
| CO-PW-VC-280 | Backfilling Works for Main Line Valves and Valve Chambers of Potable Water Network for Alignment-RD-02 | 2027-02-22 → 2027-03-01 (+7d) | 2027-02-27 → 2027-03-06 (+7d) |
| FH | **Fire Hydrant** | 2027-02-13 → 2027-02-20 (+7d) | 2027-02-27 → 2027-03-06 (+7d) |
| CO-PW-FH-200 | Excavation Works for Fire Hydrants of Potable Water Network for Alignment-RD-02 | 2027-02-13 → 2027-02-20 (+7d) | 2027-02-15 → 2027-02-22 (+7d) |
| CO-PW-FH-210 | Installation Works for Fire Hydrant of Potable Water Network for Alignment-RD-02 | 2027-02-21 → 2027-02-28 (+7d) | 2027-02-23 → 2027-03-02 (+7d) |
| CO-PW-FH-220 | Trench Backfilling and Compaction Works for Fire Hydrants of Potable Water Network for Alignment-RD-02 | 2027-02-24 → 2027-03-03 (+7d) | 2027-02-27 → 2027-03-06 (+7d) |
| IR | **Irrigation Network** | 2027-02-14 → 2027-02-21 (+7d) | 2027-03-06 → 2027-03-16 (+10d) |
| ML | **Main Line Pipes** | 2027-02-14 → 2027-02-21 (+7d) | 2027-03-06 → 2027-03-16 (+10d) |
| CO-IR-ML-200 | Trench Excavation and Bedding Works for Main Lines of Irrigation Network for Alignment-RD-02 | 2027-02-14 → 2027-02-21 (+7d) | 2027-02-16 → 2027-02-23 (+7d) |
| CO-IR-ML-210 | Pipes Laying Works for Main Lines of Irrigation Network for Alignment-RD-02 | 2027-02-21 → 2027-02-28 (+7d) | 2027-02-23 → 2027-03-02 (+7d) |
| CO-IR-ML-220 | Installation Works for Main Line Valves of Irrigation Network for Alignment-RD-02 | 2027-02-24 → 2027-03-03 (+7d) | 2027-02-27 → 2027-03-06 (+7d) |
| CO-IR-ML-240 | Installation Works for Bulbblers And Sprinkler and Irrigation Control System of Irrigation Network for Alignment-RD-02 | 2027-02-28 → 2027-03-07 (+7d) | 2027-03-02 → 2027-03-13 (+11d) |
| CO-IR-ML-230 | Trench Backfilling and Compaction Works for Main Lines of Irrigation Network for Alignment-RD-02 | 2027-03-03 → 2027-03-14 (+11d) | 2027-03-06 → 2027-03-16 (+10d) |
| MV | **Medium Voltage Network** | 2027-03-21 → 2027-03-28 (+7d) | 2027-04-03 → 2027-04-10 (+7d) |
| CW | **Cabling Works** | 2027-03-21 → 2027-03-28 (+7d) | 2027-04-03 → 2027-04-10 (+7d) |
| CO-MV-ML-310 | Trench Excavation and Bedding Works for Medium Voltage Network for Alignment-RD-02 | 2027-03-21 → 2027-03-28 (+7d) | 2027-03-24 → 2027-03-31 (+7d) |
| CO-MV-ML-320 | Duct Laying Works for Medium Voltage Network for Alignment-RD-02 | 2027-03-25 → 2027-04-01 (+7d) | 2027-03-29 → 2027-04-05 (+7d) |
| CO-MV-ML-330 | Trench Backfilling and Compaction Works for Medium Voltage Network for Alignment-RD-02 | 2027-03-30 → 2027-04-06 (+7d) | 2027-04-03 → 2027-04-10 (+7d) |
| LV | **Low Voltage Network** | 2027-03-07 → 2027-03-17 (+10d) | 2027-04-25 → 2027-05-02 (+7d) |
| MLVC | **Main Low Voltage Cables Works ( Cable 300 MM )** | 2027-03-07 → 2027-03-17 (+10d) | 2027-04-19 → 2027-04-26 (+7d) |
| CON-LV-ML-170 | Cable Laying Works for Main Cable of Low Voltage Network for Alignment-RD-02 | 2027-03-07 → 2027-03-17 (+10d) | 2027-03-23 → 2027-03-30 (+7d) |
| CON-LV-ML-160 | Trench Excavation and Bedding Works for Main Cable of Low Voltage Network for Alignment-RD-02 | 2027-04-04 → 2027-04-11 (+7d) | 2027-04-08 → 2027-04-15 (+7d) |
| CON-LV-ML-180 | Trench Backfilling and Compaction Works for Main Cable of Low Voltage Network for Alignment-RD-02 | 2027-04-10 → 2027-04-17 (+7d) | 2027-04-19 → 2027-04-26 (+7d) |
| SLVC | **Service Low Voltage Cables Works ( Cable 70 MM )** | 2027-04-10 → 2027-04-17 (+7d) | 2027-04-25 → 2027-05-02 (+7d) |
| CON-LV-HC-160 | Trench Excavation and Bedding Works for Service Cable of Low Voltage Network for Alignment-RD-02 | 2027-04-10 → 2027-04-17 (+7d) | 2027-04-13 → 2027-04-20 (+7d) |
| CON-LV-HC-170 | Cable Laying Works for Service Cable of Low Voltage Network for Alignment-RD-02 | 2027-04-14 → 2027-04-21 (+7d) | 2027-04-20 → 2027-04-27 (+7d) |
| CON-LV-HC-180 | Trench Backfilling and Compaction Works for Service Cable of Low Voltage Network for Alignment-RD-02 | 2027-04-21 → 2027-04-28 (+7d) | 2027-04-25 → 2027-05-02 (+7d) |
| DP | **Distribution Pillars Works** | 2027-04-04 → 2027-04-11 (+7d) | 2027-04-19 → 2027-04-26 (+7d) |
| CON-LV-DP-160 | Foundation Excavation Works for Distribution Pillars of Low Voltage Network for Alignment-RD-02 | 2027-04-04 → 2027-04-11 (+7d) | 2027-04-10 → 2027-04-17 (+7d) |
| CON-LV-DP-170 | Pouring Plain Concrete For Distribution Pillar Units of Low Voltage Network for Alignment-RD-02 | 2027-04-11 → 2027-04-18 (+7d) | 2027-04-14 → 2027-04-21 (+7d) |
| CON-LV-DP-180 | Installation Works for Distribution Pillar Units of Low Voltage Network for Alignment-RD-02 | 2027-04-15 → 2027-04-22 (+7d) | 2027-04-19 → 2027-04-26 (+7d) |
| SL | **Street Lighting Network** | 2027-04-11 → 2027-04-18 (+7d) | 2027-05-04 → 2027-05-11 (+7d) |
| LP | **Lighting Poles Works** | 2027-04-11 → 2027-04-18 (+7d) | 2027-04-22 → 2027-04-29 (+7d) |
| CO-SL-LP-400 | Installation Works for Lighting Poles Foundation of Street Lighting Network for Alignment-RD-02 | 2027-04-11 → 2027-04-18 (+7d) | 2027-04-14 → 2027-04-21 (+7d) |
| CO-SL-LP-410 | Installation Works for Lighting Poles of Street Lighting Network for Alignment-RD-02 | 2027-04-15 → 2027-04-22 (+7d) | 2027-04-19 → 2027-04-26 (+7d) |
| CO-SL-LP-430 | Backfilling Works for Lighting Poles of Street Lighting Network for Alignment-RD-02 | 2027-04-20 → 2027-04-27 (+7d) | 2027-04-22 → 2027-04-29 (+7d) |
| CW | **Cabling Works** | 2027-04-11 → 2027-04-18 (+7d) | 2027-04-18 → 2027-04-25 (+7d) |
| CO-SL-CL-320 | Cable Laying Works for Street Lighting Network for Alignment-RD-02 | 2027-04-11 → 2027-04-18 (+7d) | 2027-04-14 → 2027-04-21 (+7d) |
| CO-SL-CL-330 | Trench Backfilling and Compaction Works for Street Lighting Network for Alignment-RD-02 | 2027-04-15 → 2027-04-22 (+7d) | 2027-04-18 → 2027-04-25 (+7d) |
| DPB | **Distrubution Panel Boards** | 2027-04-24 → 2027-05-01 (+7d) | 2027-05-04 → 2027-05-11 (+7d) |
| CO-SL-DB-330 | Installation Works for Panel Board Concrete Foundations of Street Lighting Network for Alignment-RD-02 | 2027-04-24 → 2027-05-01 (+7d) | 2027-04-26 → 2027-05-03 (+7d) |
| CO-SL-DB-340 | Installation Works for Lighting Panel Boards of Street Lighting Network for Alignment-RD-02 | 2027-04-27 → 2027-05-04 (+7d) | 2027-05-04 → 2027-05-11 (+7d) |
| TE | **Telecom and Light Current Network** | 2027-04-04 → 2027-04-11 (+7d) | 2027-05-22 → 2027-05-29 (+7d) |
| PD | **Ducts Works** | 2027-05-05 → 2027-05-12 (+7d) | 2027-05-22 → 2027-05-29 (+7d) |
| CO-TE-DW-190 | Pipes Laying Works for Ducts of Telecom Network for Alignment-RD-02 | 2027-05-05 → 2027-05-12 (+7d) | 2027-05-10 → 2027-05-23 (+13d) |
| CO-TE-DW-200 | Trench Backfilling and Compaction Works for Ducts of Telecom Network for Alignment-RD-02 | 2027-05-11 → 2027-05-24 (+13d) | 2027-05-22 → 2027-05-29 (+7d) |
| MH | **Manholes Works** | 2027-04-04 → 2027-04-11 (+7d) | 2027-04-13 → 2027-04-20 (+7d) |
| CO-TE-MH-200 | Excavation Works for Manholes of Telecom Network for Alignment-RD-02 | 2027-04-04 → 2027-04-11 (+7d) | 2027-04-06 → 2027-04-13 (+7d) |
| CO-TE-MH-210 | Installation Works for Manholes of Telecom Network for Alignment-RD-02 | 2027-04-07 → 2027-04-14 (+7d) | 2027-04-10 → 2027-04-17 (+7d) |
| CO-TE-MH-220 | Backfilling Works for Manholes of Telecom Network for Alignment-RD-02 | 2027-04-11 → 2027-04-18 (+7d) | 2027-04-13 → 2027-04-20 (+7d) |
| DD | **CCTV, Telephone, MSN, ACs System Works** | 2027-04-14 → 2027-04-21 (+7d) | 2027-04-20 → 2027-04-27 (+7d) |
| CO-TE-CTV-180 | Installation of CCTV, Telephone, ACS and MSN Systems Cables for Alignment-RD-02 | 2027-04-14 → 2027-04-21 (+7d) | 2027-04-20 → 2027-04-27 (+7d) |
| RD | **Road Works** | 2027-04-26 → 2027-05-03 (+7d) | 2027-05-31 → 2027-06-07 (+7d) |
| LS | **Pavement Works** | 2027-04-26 → 2027-05-03 (+7d) | 2027-05-11 → 2027-05-24 (+13d) |
| CO-RD-PV-200 | Fixing of Curbstone for Sidewalks Pavement for Alignment-RD-02 | 2027-04-26 → 2027-05-03 (+7d) | 2027-05-01 → 2027-05-08 (+7d) |
| CO-RD-PV-210 | Fixing of Interlock Tiles for Sidewalks Pavement for Alignment-RD-02 | 2027-05-02 → 2027-05-09 (+7d) | 2027-05-11 → 2027-05-24 (+13d) |
| TS | **Traffic Signs Boards and Roads Marking** | 2027-05-23 → 2027-05-30 (+7d) | 2027-05-31 → 2027-06-07 (+7d) |
| CO-RD-F-RM-200 | Application of Road Marking Works For Road Works for Alignment-RD-02 | 2027-05-23 → 2027-05-30 (+7d) | 2027-05-26 → 2027-06-02 (+7d) |
| CO-RD-F-TS-140 | Installation Works of Traffic Signs Boards For Road Works for Alignment-RD-02 | 2027-05-27 → 2027-06-03 (+7d) | 2027-05-31 → 2027-06-07 (+7d) |
| 3 | **Finishes for Infrastructure Networks** | 2027-04-04 → 2027-04-11 (+7d) | 2027-06-14 → 2027-06-21 (+7d) |
| 11 | **Storm Drainage Network** | 2027-05-05 → 2027-05-12 (+7d) | 2027-06-14 → 2027-06-21 (+7d) |
| TF | **Testing and Finishes** | 2027-05-05 → 2027-05-12 (+7d) | 2027-06-14 → 2027-06-21 (+7d) |
| CO-SD-ML-TF-120 | Testing Work for Pipes of Storm Drainage Network for Alignment-RD-02 | 2027-05-05 → 2027-05-12 (+7d) | 2027-05-11 → 2027-05-24 (+13d) |
| CO-SD-CB-TF-220 | Catch Basin Internal Finishes (Benching ) for Storm Drainage Network for Alignment-RD-02 | 2027-05-23 → 2027-05-30 (+7d) | 2027-05-29 → 2027-06-05 (+7d) |
| CO-SD-MH-TF-250 | Testing Works for Manholes of Storm Drainage Network for Alignment-RD-02 | 2027-05-23 → 2027-05-30 (+7d) | 2027-05-29 → 2027-06-05 (+7d) |

| ID | Task | Start | Finish |
| --- | --- | --- | --- |
| CO-SD-CB-TF-200 | Testing Works for Catch Basins of Storm Drainage Network for Alignment-RD-02 | 2027-05-30 → 2027-06-06 (+7d) | 2027-06-05 → 2027-06-12 (+7d) |
| CO-SD-CB-TF-210 | Install Catch Basin Cover Works for External Finishes of Storm Drainage Network for Alignment-RD-02 | 2027-06-06 → 2027-06-13 (+7d) | 2027-06-14 → 2027-06-21 (+7d) |
| 10 | **Sewage Network** | 2027-04-24 → 2027-05-01 (+7d) | 2027-05-13 → 2027-05-26 (+13d) |
| TF | **Testing and Finishes** | 2027-04-24 → 2027-05-01 (+7d) | 2027-05-13 → 2027-05-26 (+13d) |
| CO-SW-TF-270 | Final Testing For Main Line of Sewage Network for Alignment-RD-02 | 2027-04-24 → 2027-05-01 (+7d) | 2027-05-13 → 2027-05-26 (+13d) |
| CO-SW-TF-290 | Testing Works for Main Line Manholes of Sewage Network for Alignment-RD-02 | 2027-04-24 → 2027-05-01 (+7d) | 2027-05-13 → 2027-05-26 (+13d) |
| 9 | **Potable Water Network** | 2027-04-20 → 2027-04-27 (+7d) | 2027-05-30 → 2027-06-06 (+7d) |
| TF | **Testing and Finishes** | 2027-04-20 → 2027-04-27 (+7d) | 2027-05-30 → 2027-06-06 (+7d) |
| CO-PW-TF-170 | Fire Hydrant Finishies (S.Box + Safety + Marker Post ) of Potable Water Network for Alignment-RD-02 | 2027-04-20 → 2027-04-27 (+7d) | 2027-05-05 → 2027-05-12 (+7d) |
| CO-PW-TF-180 | Final Finishes works and Covers for Valves and Valve Chambers for Alignment-RD-02 | 2027-05-06 → 2027-05-13 (+7d) | 2027-05-20 → 2027-05-27 (+7d) |
| CO-PW-TF-160 | Testing of Potable Water Network for Alignment-RD-02 | 2027-05-22 → 2027-05-29 (+7d) | 2027-05-30 → 2027-06-06 (+7d) |
| 13 | **Irrigation Network** | 2027-05-02 → 2027-05-09 (+7d) | 2027-05-05 → 2027-05-12 (+7d) |
| TF | **Testing and Finishes** | 2027-05-02 → 2027-05-09 (+7d) | 2027-05-05 → 2027-05-12 (+7d) |
| CO-IR-TF-180 | Final Testing (pressure tests) of Irrigation Network for Alignment-RD-02 | 2027-05-02 → 2027-05-09 (+7d) | 2027-05-05 → 2027-05-12 (+7d) |
| 1 | **Treated Sewage Effluent (Tse)** | 2027-05-23 → 2027-05-30 (+7d) | 2027-05-29 → 2027-06-05 (+7d) |
| TF | **Testing and Finishes** | 2027-05-23 → 2027-05-30 (+7d) | 2027-05-29 → 2027-06-05 (+7d) |
| CO-TSE-TF-190 | Final Testing (pressure tests) of Treated Sewage Effluent (Tse) for Alignment-RD-02 | 2027-05-23 → 2027-05-30 (+7d) | 2027-05-29 → 2027-06-05 (+7d) |
| 14 | **Medium Voltage Network** | 2027-04-04 → 2027-04-11 (+7d) | 2027-04-10 → 2027-04-17 (+7d) |
| TT | **Termination and Testing Works** | 2027-04-04 → 2027-04-11 (+7d) | 2027-04-10 → 2027-04-17 (+7d) |
| CO-MV-TF-240 | Testing and Termination Works of Medium Voltage Network for Alignment-RD-02 | 2027-04-04 → 2027-04-11 (+7d) | 2027-04-10 → 2027-04-17 (+7d) |
| 6 | **Low Voltage Network** | 2027-04-25 → 2027-05-02 (+7d) | 2027-05-03 → 2027-05-10 (+7d) |
| TT | **Termination and Testing Works** | 2027-04-25 → 2027-05-02 (+7d) | 2027-05-03 → 2027-05-10 (+7d) |
| CON-LV-TT-150 | Testing and Termination Works for Distribution Pillars Units of Low Voltage Network for Alignment-RD-02 | 2027-04-25 → 2027-05-02 (+7d) | 2027-04-28 → 2027-05-05 (+7d) |
| CON-LV-TT-140 | Testing and Termination Works for Substation Low Voltage Panel Boards of Low Voltage Network for Alignment-RD-02 | 2027-04-29 → 2027-05-06 (+7d) | 2027-05-03 → 2027-05-10 (+7d) |
| 1 | **Earthing System Works** | 2027-04-29 → 2027-05-06 (+7d) | 2027-05-01 → 2027-05-08 (+7d) |
| CON-LV-ES-120 | Earthing System Works for Distribution Pillars Units of Low Voltage Network for Alignment-RD-02 | 2027-04-29 → 2027-05-06 (+7d) | 2027-05-01 → 2027-05-08 (+7d) |
| 12 | **Street Lighting Network** | 2027-04-27 → 2027-05-04 (+7d) | 2027-05-20 → 2027-05-27 (+7d) |
| TR | **Termination and Testing Works** | 2027-04-27 → 2027-05-04 (+7d) | 2027-05-20 → 2027-05-27 (+7d) |
| CO-SL-LP-420 | Installation Works for Lighting Fixtures With Drop Wire of Street Lighting Network for Alignment-RD-02 | 2027-04-27 → 2027-05-04 (+7d) | 2027-04-28 → 2027-05-05 (+7d) |
| CO-SL-TF-440 | Termination Works For Panel Board Cables of Street Lighting Network for Alignment-RD-02 | 2027-05-05 → 2027-05-12 (+7d) | 2027-05-11 → 2027-05-24 (+13d) |
| CO-SL-TF-450 | Testing Works for Lighting Poles of Street Lighting Network for Alignment-RD-02 | 2027-05-13 → 2027-05-26 (+13d) | 2027-05-20 → 2027-05-27 (+7d) |
| CO-SL-TF-460 | Testing Works For Panel Board Cables of Street Lighting Network for Alignment-RD-02 | 2027-05-13 → 2027-05-26 (+13d) | 2027-05-20 → 2027-05-27 (+7d) |
| ES | **Earthing System Works** | 2027-04-29 → 2027-05-06 (+7d) | 2027-05-12 → 2027-05-25 (+13d) |
| CO-SL-ES-260 | Install Earthing System Works for Lighting Poles of Street Lighting Network for Alignment-RD-02 | 2027-04-29 → 2027-05-06 (+7d) | 2027-05-05 → 2027-05-12 (+7d) |
| CO-SL-ES-270 | Install Earthing System Works for Lighting Panel Boards of Street Lighting Network for Alignment-RD-02 | 2027-05-06 → 2027-05-13 (+7d) | 2027-05-12 → 2027-05-25 (+13d) |
| 3 | **Telecom and Light Current Network** | 2027-04-29 → 2027-05-06 (+7d) | 2027-05-05 → 2027-05-12 (+7d) |
| 1 | **Testing and Finishes** | 2027-04-29 → 2027-05-06 (+7d) | 2027-05-05 → 2027-05-12 (+7d) |
| CO-TE-CTV-TF-220 | Testing and Interface modules with Telecom for Alignment-RD-02 | 2027-04-29 → 2027-05-06 (+7d) | 2027-05-02 → 2027-05-09 (+7d) |
| CO-TE-CTV-TF-350 | Testing and Interface modules with CCTV, Telephone, MSN and Access Control for Alignment-RD-02 | 2027-05-03 → 2027-05-10 (+7d) | 2027-05-05 → 2027-05-12 (+7d) |
| 3 | **Alignment-RD-03-1** | 2026-10-19 → 2026-10-26 (+7d) | 2027-05-09 → 2027-05-22 (+13d) |
| EW | **Earthworks** | 2026-10-19 → 2026-10-26 (+7d) | 2026-11-01 → 2026-11-08 (+7d) |
| EW | **Earthworks** | 2026-10-19 → 2026-10-26 (+7d) | 2026-11-01 → 2026-11-08 (+7d) |
| CO-EW-200 | Excavation and Backfilling Works Upto Design Level for Earthworks for Alignment-RD-03-1 | 2026-10-19 → 2026-10-26 (+7d) | 2026-11-01 → 2026-11-08 (+7d) |
| SD | **Storm Drainage Network** | 2026-11-02 → 2026-11-09 (+7d) | 2026-12-09 → 2026-12-16 (+7d) |
| MH | **Manholes** | 2026-11-02 → 2026-11-09 (+7d) | 2026-12-09 → 2026-12-16 (+7d) |
| CO-SD-MH-180 | Trench Excavation and Bedding Works for Manholes of Storm Drainage Network for Alignment-RD-03-1 | 2026-11-02 → 2026-11-09 (+7d) | 2026-11-12 → 2026-11-19 (+7d) |
| CO-SD-MH-190 | Install RC Footing Works for Manholes of Storm Drainage Network for Alignment-RD-03-1 | 2026-11-14 → 2026-11-21 (+7d) | 2026-11-16 → 2026-11-23 (+7d) |
| CO-SD-MH-200 | Install RC Wall Rings & Slab Works for Manholes of Storm Drainage Network for Alignment-RD-03-1 | 2026-11-17 → 2026-11-24 (+7d) | 2026-11-28 → 2026-12-05 (+7d) |
| CO-SD-MH-220 | Backfilling Works for Manholes of Storm Drainage Network for Alignment-RD-03-1 | 2026-11-29 → 2026-12-06 (+7d) | 2026-12-09 → 2026-12-16 (+7d) |
| ML | **Main Line Sections** | 2026-11-29 → 2026-12-06 (+7d) | 2026-12-09 → 2026-12-16 (+7d) |
| CO-SD-ML-100 | Trench Excavation and Bedding Works for Main Lines of Storm Drainage Network for Alignment-RD-03-1 | 2026-11-29 → 2026-12-06 (+7d) | 2026-12-01 → 2026-12-08 (+7d) |
| CO-SD-ML-120 | Pipes Laying Works for Main Lines of Storm Drainage Network for Alignment-RD-03-1 | 2026-12-02 → 2026-12-09 (+7d) | 2026-12-05 → 2026-12-12 (+7d) |
| CO-SD-ML-130 | Trench Backfilling and Compaction Works for Main Lines of Storm Drainage Network for Alignment-RD-03-1 | 2026-12-06 → 2026-12-13 (+7d) | 2026-12-09 → 2026-12-16 (+7d) |
| TSE | **Treated Sewage Effluent (Tse)** | 2026-12-17 → 2026-12-24 (+7d) | 2027-05-08 → 2027-05-20 (+12d) |
| CO-TSE-ML-150 | Trench Excavation and Bedding Works for Main Lines of Treated Sewage Effluent (Tse) for Alignment-RD-03-1 | 2026-12-17 → 2026-12-24 (+7d) | 2026-12-21 → 2026-12-28 (+7d) |
| CO-TSE-ML-160 | Pipes Laying Works for Main Lines of Treated Sewage Effluent (Tse) for Alignment-RD-03-1 | 2026-12-22 → 2026-12-29 (+7d) | 2026-12-26 → 2027-01-02 (+7d) |
| CO-TSE-ML-170 | Installation Works for Main Line Valves of Treated Sewage Effluent (Tse) for Alignment-RD-03-1 | 2026-12-27 → 2027-01-03 (+7d) | 2027-01-02 → 2027-01-09 (+7d) |
| CO-TSE-ML-190 | Installation Works for Valve and Washout Chambers of Treated Sewage Effluent (Tse) for Alignment-RD-03-1 | 2027-01-03 → 2027-01-10 (+7d) | 2027-01-09 → 2027-01-16 (+7d) |
| CO-TSE-ML-180 | Trench Backfilling and Compaction Works for Treated Sewage Effluent (Tse) for Alignment-RD-03-1 | 2027-01-10 → 2027-01-17 (+7d) | 2027-01-14 → 2027-01-21 (+7d) |
| TA | **Treated Sewage Effluent (Tse) Storage Tank** | 2027-05-02 → 2027-05-09 (+7d) | 2027-05-08 → 2027-05-20 (+12d) |
| CO-TSE-TF-180 | Installation of Storage Tank of Treated Sewage Effluent (Tse) for Alignment-RD-03-1 | 2027-05-02 → 2027-05-09 (+7d) | 2027-05-08 → 2027-05-20 (+12d) |
| PW | **Potable Water Network** | 2027-01-16 → 2027-01-23 (+7d) | 2027-05-01 → 2027-05-08 (+7d) |
| ML | **Main Line Sections** | 2027-01-16 → 2027-01-23 (+7d) | 2027-02-03 → 2027-02-10 (+7d) |
| CO-PW-ML-100 | Trench Excavation and Bedding Works for Main Lines of Potable Water Network for Alignment-RD-03-1 | 2027-01-16 → 2027-01-23 (+7d) | 2027-01-20 → 2027-01-27 (+7d) |
| CO-PW-ML-110 | Pipes Laying and accessories for Main Lines of Potable Water Network for Alignment-RD-03-1 | 2027-01-21 → 2027-01-28 (+7d) | 2027-01-26 → 2027-02-02 (+7d) |
| CO-PW-ML-130 | Trench Backfilling and Compaction Works for Main Lines of Potable Water Network for Alignment-RD-03-1 | 2027-01-27 → 2027-02-03 (+7d) | 2027-02-03 → 2027-02-10 (+7d) |
| VC | **Valve Chamber** | 2027-01-18 → 2027-01-25 (+7d) | 2027-02-06 → 2027-02-13 (+7d) |
| CO-PW-VC-170 | Excavation Works for Main Line Valves and Valve Chambers of Potable Water Network for Alignment-RD-03-1 | 2027-01-18 → 2027-01-25 (+7d) | 2027-01-20 → 2027-01-27 (+7d) |
| CO-PW-VC180 | Installation of Valve Chambers of Potable Water Network for Alignment-RD-03-1 | 2027-01-21 → 2027-01-28 (+7d) | 2027-01-24 → 2027-01-31 (+7d) |
| CO-PW-VC-190 | Installation Works for Valves of Potable Water Network for Alignment-RD-03-1 | 2027-01-31 → 2027-02-07 (+7d) | 2027-02-02 → 2027-02-09 (+7d) |

| ID | Task | Start | Finish |
| --- | --- | --- | --- |
| CO-PW-VC-220 | Backfilling Works for Main Line Valves and Valve Chambers of Potable Water Network for Alignment-RD-03-1 | 2027-02-03 → 2027-02-10 (+7d) | 2027-02-06 → 2027-02-13 (+7d) |
| FH | **Fire Hydrant** | 2027-01-21 → 2027-01-28 (+7d) | 2027-02-06 → 2027-02-13 (+7d) |
| CO-PW-FH-140 | Excavation Works for Fire Hydrants of Potable Water Network for Alignment-RD-03-1 | 2027-01-21 → 2027-01-28 (+7d) | 2027-01-23 → 2027-01-30 (+7d) |
| CO-PW-FH-150 | Installation Works for Fire Hydrant of Potable Water Network for Alignment-RD-03-1 | 2027-01-27 → 2027-02-03 (+7d) | 2027-01-28 → 2027-02-04 (+7d) |
| CO-PW-FH-160 | Trench Backfilling and Compaction Works for Fire Hydrants of Potable Water Network for Alignment-RD-03-1 | 2027-02-04 → 2027-02-11 (+7d) | 2027-02-06 → 2027-02-13 (+7d) |
| TA | **Potable Water Network Storage Tank** | 2027-04-25 → 2027-05-02 (+7d) | 2027-05-01 → 2027-05-08 (+7d) |
| CO-PW-TF-130 | Installation of Storage Tank of Potable Water Network for Alignment-RD-03-1 | 2027-04-25 → 2027-05-02 (+7d) | 2027-05-01 → 2027-05-08 (+7d) |
| LV | **Low Voltage Network** | 2027-02-04 → 2027-02-11 (+7d) | 2027-04-03 → 2027-04-10 (+7d) |
| MLVC | **Main Low Voltage Cables Works ( Cable 300 MM )** | 2027-02-04 → 2027-02-11 (+7d) | 2027-02-25 → 2027-03-04 (+7d) |
| CON-LV-ML-100 | Trench Excavation and Bedding Works for Main Cable of Low Voltage Network for Alignment-RD-03-1 | 2027-02-04 → 2027-02-11 (+7d) | 2027-02-13 → 2027-02-20 (+7d) |
| CON-LV-ML-110 | Cable Laying Works for Main Cable of Low Voltage Network for Alignment-RD-03-1 | 2027-02-14 → 2027-02-21 (+7d) | 2027-02-21 → 2027-02-28 (+7d) |
| CON-LV-ML-120 | Trench Backfilling and Compaction Works for Main Cable of Low Voltage Network for Alignment-RD-03-1 | 2027-02-22 → 2027-03-01 (+7d) | 2027-02-25 → 2027-03-04 (+7d) |
| SLVC | **Service Low Voltage Cables Works ( Cable 70 MM )** | 2027-02-14 → 2027-02-21 (+7d) | 2027-03-20 → 2027-03-27 (+7d) |
| CON-LV-HC-100 | Trench Excavation and Bedding Works for Service Cable of Low Voltage Network for Alignment-RD-03-1 | 2027-02-14 → 2027-02-21 (+7d) | 2027-02-17 → 2027-02-24 (+7d) |
| CON-LV-HC-110 | Cable Laying Works for Service Cable of Low Voltage Network for Alignment-RD-03-1 | 2027-03-06 → 2027-03-16 (+10d) | 2027-03-16 → 2027-03-23 (+7d) |
| CON-LV-HC-120 | Trench Backfilling and Compaction Works for Service Cable of Low Voltage Network for Alignment-RD-03-1 | 2027-03-17 → 2027-03-24 (+7d) | 2027-03-20 → 2027-03-27 (+7d) |
| DP | **Distribution Pillars Works** | 2027-03-21 → 2027-03-28 (+7d) | 2027-04-03 → 2027-04-10 (+7d) |
| CON-LV-DP-100 | Foundation Excavation Works for Distribution Pillars of Low Voltage Network for Alignment-RD-03-1 | 2027-03-21 → 2027-03-28 (+7d) | 2027-03-24 → 2027-03-31 (+7d) |
| CON-LV-DP-110 | Pouring Plain Concrete For Distribution Pillar Units of Low Voltage Network for Alignment-RD-03-1 | 2027-03-25 → 2027-04-01 (+7d) | 2027-03-29 → 2027-04-05 (+7d) |
| CON-LV-DP-120 | Installation Works for Distribution Pillar Units of Low Voltage Network for Alignment-RD-03-1 | 2027-03-30 → 2027-04-06 (+7d) | 2027-04-03 → 2027-04-10 (+7d) |
| SL | **Street Lighting Network** | 2027-03-06 → 2027-03-16 (+10d) | 2027-03-31 → 2027-04-07 (+7d) |
| LP | **Lighting Poles Works** | 2027-03-06 → 2027-03-16 (+10d) | 2027-03-27 → 2027-04-03 (+7d) |
| CO-SL-LP-550 | Installation Works for Lighting Poles Foundation of Street Lighting Network for Alignment-RD-03-1 | 2027-03-06 → 2027-03-16 (+10d) | 2027-03-14 → 2027-03-21 (+7d) |
| CO-SL-LP-560 | Installation Works for Lighting Poles of Street Lighting Network for Alignment-RD-03-1 | 2027-03-15 → 2027-03-22 (+7d) | 2027-03-20 → 2027-03-27 (+7d) |
| CO-SL-LP-570 | Backfilling Works for Lighting Poles of Street Lighting Network for Alignment-RD-03-1 | 2027-03-21 → 2027-03-28 (+7d) | 2027-03-27 → 2027-04-03 (+7d) |
| CW | **Cabling Works** | 2027-03-21 → 2027-03-28 (+7d) | 2027-03-31 → 2027-04-07 (+7d) |
| CO-SL-CL-410 | Cable Laying Works for Street Lighting Network for Alignment-RD-03-1 | 2027-03-21 → 2027-03-28 (+7d) | 2027-03-25 → 2027-04-01 (+7d) |
| CO-SL-CL-420 | Trench Backfilling and Compaction Works for Street Lighting Network for Alignment-RD-03-1 | 2027-03-27 → 2027-04-03 (+7d) | 2027-03-31 → 2027-04-07 (+7d) |
| TE | **Telecom and Light Current Network** | 2027-03-28 → 2027-04-04 (+7d) | 2027-04-10 → 2027-04-17 (+7d) |
| PD | **Ducts Works** | 2027-04-01 → 2027-04-08 (+7d) | 2027-04-10 → 2027-04-17 (+7d) |
| CO-TE-DW-110 | Pipes Laying Works for Ducts of Telecom Network for Alignment-RD-03-1 | 2027-04-01 → 2027-04-08 (+7d) | 2027-04-05 → 2027-04-12 (+7d) |
| CO-TE-DW-130 | Trench Backfilling and Compaction Works for Ducts of Telecom Network for Alignment-RD-03-1 | 2027-04-06 → 2027-04-13 (+7d) | 2027-04-10 → 2027-04-17 (+7d) |
| MH | **Manholes Works** | 2027-03-28 → 2027-04-04 (+7d) | 2027-04-03 → 2027-04-10 (+7d) |
| CO-TE-MH-140 | Excavation Works for Manholes of Telecom Network for Alignment-RD-03-1 | 2027-03-28 → 2027-04-04 (+7d) | 2027-03-29 → 2027-04-05 (+7d) |
| CO-TE-MH-150 | Installation Works for Manholes of Telecom Network for Alignment-RD-03-1 | 2027-03-30 → 2027-04-06 (+7d) | 2027-03-31 → 2027-04-07 (+7d) |
| CO-TE-MH-160 | Backfilling Works for Manholes of Telecom Network for Alignment-RD-03-1 | 2027-04-01 → 2027-04-08 (+7d) | 2027-04-03 → 2027-04-10 (+7d) |
| DD | **CCTV, Telephone, MSN, ACs System Works** | 2027-04-04 → 2027-04-11 (+7d) | 2027-04-07 → 2027-04-14 (+7d) |
| CO-TE-CTV-110 | Installation of CCTV, Telephone, ACS and MSN Systems Cables for Alignment-RD-03-1 | 2027-04-04 → 2027-04-11 (+7d) | 2027-04-07 → 2027-04-14 (+7d) |
| RD | **Road Works** | 2027-04-11 → 2027-04-18 (+7d) | 2027-05-05 → 2027-05-12 (+7d) |
| RD | **Pre-Bituminous Construction** | 2027-04-11 → 2027-04-18 (+7d) | 2027-04-26 → 2027-05-03 (+7d) |
| CO-RD-PB-140 | Subgrade Layer for Road Works for Alignment-RD-03-1 | 2027-04-11 → 2027-04-18 (+7d) | 2027-04-18 → 2027-04-25 (+7d) |
| CO-RD-PB-150 | Aggregate Base Course Layer for Road Works for Alignment-RD-03-1 | 2027-04-19 → 2027-04-26 (+7d) | 2027-04-26 → 2027-05-03 (+7d) |
| 1 | **Bituminous Construction** | 2027-04-19 → 2027-04-26 (+7d) | 2027-04-26 → 2027-05-03 (+7d) |
| CO-RD-B-160 | Bituminous Base Courses Layers for Road Works for Alignment-RD-03-1 | 2027-04-19 → 2027-04-26 (+7d) | 2027-04-20 → 2027-04-27 (+7d) |
| CON-RD-MR-150 | Preparation of Asphaltic Wearing Course Layer for Roads Network for Alignment-RD-03-1 | 2027-04-25 → 2027-05-02 (+7d) | 2027-04-26 → 2027-05-03 (+7d) |
| LS | **Pavement Works** | 2027-04-21 → 2027-04-28 (+7d) | 2027-05-05 → 2027-05-12 (+7d) |
| CO-RD-PV-160 | Fixing of Curbstone for Sidewalks Pavement for Alignment-RD-03-1 | 2027-04-21 → 2027-04-28 (+7d) | 2027-04-26 → 2027-05-03 (+7d) |
| CO-RD-PV-170 | Fixing of Interlock Tiles for Sidewalks Pavement for Alignment-RD-03-1 | 2027-04-27 → 2027-05-04 (+7d) | 2027-05-05 → 2027-05-12 (+7d) |
| TS | **Traffic Signs Boards and Roads Marking** | 2027-04-27 → 2027-05-04 (+7d) | 2027-05-01 → 2027-05-08 (+7d) |
| CO-RD-F-RM-180 | Application of Road Marking Works For Road Works for Alignment-RD-03-1 | 2027-04-27 → 2027-05-04 (+7d) | 2027-04-28 → 2027-05-05 (+7d) |
| CO-RD-F-TS-120 | Installation Works of Traffic Signs Boards For Road Works for Alignment-RD-03-1 | 2027-04-29 → 2027-05-06 (+7d) | 2027-05-01 → 2027-05-08 (+7d) |
| 3 | **Finishes for Infrastructure Networks** | 2027-04-04 → 2027-04-11 (+7d) | 2027-05-09 → 2027-05-22 (+13d) |
| 11 | **Storm Drainage Network** | 2027-04-24 → 2027-05-01 (+7d) | 2027-04-29 → 2027-05-06 (+7d) |
| TF | **Testing and Finishes** | 2027-04-24 → 2027-05-01 (+7d) | 2027-04-29 → 2027-05-06 (+7d) |
| CO-SD-ML-TF-100 | Testing Work for Pipes of Storm Drainage Network for Alignment-RD-03-1 | 2027-04-24 → 2027-05-01 (+7d) | 2027-04-26 → 2027-05-03 (+7d) |
| CO-SD-MH-TF-210 | Testing Works for Manholes of Storm Drainage Network for Alignment-RD-03-1 | 2027-04-27 → 2027-05-04 (+7d) | 2027-04-29 → 2027-05-06 (+7d) |
| 9 | **Potable Water Network** | 2027-04-20 → 2027-04-27 (+7d) | 2027-04-24 → 2027-05-01 (+7d) |
| TF | **Testing and Finishes** | 2027-04-20 → 2027-04-27 (+7d) | 2027-04-24 → 2027-05-01 (+7d) |
| CO-PW-TF-100 | Final Finishes works and Covers for Valves and Valve Chambers for Alignment-RD-03-1 | 2027-04-20 → 2027-04-27 (+7d) | 2027-04-24 → 2027-05-01 (+7d) |
| CO-PW-TF-110 | Testing of Potable Water Network for Alignment-RD-03-1 | 2027-04-20 → 2027-04-27 (+7d) | 2027-04-21 → 2027-04-28 (+7d) |
| CO-PW-TF-120 | Fire Hydrant Finishies (S.Box + Safety + Marker Post ) of Potable Water Network for Alignment-RD-03-1 | 2027-04-20 → 2027-04-27 (+7d) | 2027-04-22 → 2027-04-29 (+7d) |
| 1 | **Treated Sewage Effluent (Tse)** | 2027-05-09 → 2027-05-22 (+13d) | 2027-05-09 → 2027-05-22 (+13d) |
| TF | **Testing and Finishes** | 2027-05-09 → 2027-05-22 (+13d) | 2027-05-09 → 2027-05-22 (+13d) |
| CO-TSE-TF-170 | Final Testing (pressure tests) of Treated Sewage Effluent (Tse) for Alignment-RD-03-1 | 2027-05-09 → 2027-05-22 (+13d) | 2027-05-09 → 2027-05-22 (+13d) |
| 6 | **Low Voltage Network** | 2027-04-04 → 2027-04-11 (+7d) | 2027-04-07 → 2027-04-14 (+7d) |
| TT | **Termination and Testing Works** | 2027-04-04 → 2027-04-11 (+7d) | 2027-04-07 → 2027-04-14 (+7d) |
| CON-LV-TT-110 | Testing and Termination Works for Distribution Pillars Units of Low Voltage Network for Alignment-RD-03-1 | 2027-04-04 → 2027-04-11 (+7d) | 2027-04-05 → 2027-04-12 (+7d) |
| CON-LV-TT-100 | Testing and Termination Works for Substation Low Voltage Panel Boards of Low Voltage Network for Alignment-RD-03-1 | 2027-04-06 → 2027-04-13 (+7d) | 2027-04-07 → 2027-04-14 (+7d) |
| 1 | **Earthing System Works** | 2027-04-06 → 2027-04-13 (+7d) | 2027-04-07 → 2027-04-14 (+7d) |
| CON-LV-ES-100 | Earthing System Works for Distribution Pillars Units of Low Voltage Network for Alignment-RD-03-1 | 2027-04-06 → 2027-04-13 (+7d) | 2027-04-07 → 2027-04-14 (+7d) |

| ID | Task | Start | Finish |
| --- | --- | --- | --- |
| 12 | **Street Lighting Network** | 2027-04-13 → 2027-04-20 (+7d) | 2027-05-02 → 2027-05-09 (+7d) |
| TR | **Termination and Testing Works** | 2027-04-13 → 2027-04-20 (+7d) | 2027-05-02 → 2027-05-09 (+7d) |
| CO-SL-LP-580 | Installation Works for Lighting Fixtures With Drop Wire of Street Lighting Network for Alignment-RD-03-1 | 2027-04-13 → 2027-04-20 (+7d) | 2027-04-19 → 2027-04-26 (+7d) |
| CO-SL-TF-570 | Testing Works for Lighting Poles of Street Lighting Network for Alignment-RD-03-1 | 2027-04-26 → 2027-05-03 (+7d) | 2027-05-02 → 2027-05-09 (+7d) |
| ES | **Earthing System Works** | 2027-04-20 → 2027-04-27 (+7d) | 2027-04-25 → 2027-05-02 (+7d) |
| CO-SL-ES-320 | Install Earthing System Works for Lighting Poles of Street Lighting Network for Alignment-RD-03-1 | 2027-04-20 → 2027-04-27 (+7d) | 2027-04-22 → 2027-04-29 (+7d) |
| CO-SL-ES-330 | Install Earthing System Works for Lighting Panel Boards of Street Lighting Network for Alignment-RD-03-1 | 2027-04-24 → 2027-05-01 (+7d) | 2027-04-25 → 2027-05-02 (+7d) |
| 3 | **Telecom and Light Current Network** | 2027-04-08 → 2027-04-15 (+7d) | 2027-04-14 → 2027-04-21 (+7d) |
| 1 | **Testing and Finishes** | 2027-04-08 → 2027-04-15 (+7d) | 2027-04-14 → 2027-04-21 (+7d) |
| CO-TE-CTV-TF-140 | Testing and Interface modules with Telecom for Alignment-RD-03-1 | 2027-04-08 → 2027-04-15 (+7d) | 2027-04-14 → 2027-04-21 (+7d) |
| CO-TE-CTV-TF-330 | Testing and Interface modules with CCTV, Telephone, MSN and Access Control for Alignment-RD-03-1 | 2027-04-08 → 2027-04-15 (+7d) | 2027-04-14 → 2027-04-21 (+7d) |
| 2 | **Alignment-RD-03-2** | 2026-10-21 → 2026-10-28 (+7d) | 2027-06-10 → 2027-06-17 (+7d) |
| EW | **Earthworks** | 2026-10-21 → 2026-10-28 (+7d) | 2026-11-03 → 2026-11-10 (+7d) |
| EW | **Earthworks** | 2026-10-21 → 2026-10-28 (+7d) | 2026-11-03 → 2026-11-10 (+7d) |
| CO-EW-240 | Excavation and Backfilling Works Upto Design Level for Earthworks for Alignment-RD-03-2 | 2026-10-21 → 2026-10-28 (+7d) | 2026-11-03 → 2026-11-10 (+7d) |
| SD | **Storm Drainage Network** | 2026-12-10 → 2026-12-17 (+7d) | 2027-02-02 → 2027-02-09 (+7d) |
| MH | **Manholes** | 2026-12-10 → 2026-12-17 (+7d) | 2027-01-20 → 2027-01-27 (+7d) |
| CO-SD-MH-350 | Trench Excavation and Bedding Works for Manholes of Storm Drainage Network for Alignment-RD-03-2 | 2026-12-10 → 2026-12-17 (+7d) | 2026-12-21 → 2026-12-28 (+7d) |
| CO-SD-MH-360 | Install RC Footing Works for Manholes of Storm Drainage Network for Alignment-RD-03-2 | 2026-12-22 → 2026-12-29 (+7d) | 2026-12-31 → 2027-01-07 (+7d) |
| CO-SD-MH-370 | Install RC Wall Rings & Slab Works for Manholes of Storm Drainage Network for Alignment-RD-03-2 | 2027-01-02 → 2027-01-09 (+7d) | 2027-01-12 → 2027-01-19 (+7d) |
| CO-SD-MH-380 | Backfilling Works for Manholes of Storm Drainage Network for Alignment-RD-03-2 | 2027-01-13 → 2027-01-20 (+7d) | 2027-01-20 → 2027-01-27 (+7d) |
| ML | **Main Line Sections** | 2027-01-13 → 2027-01-20 (+7d) | 2027-02-02 → 2027-02-09 (+7d) |
| CO-SD-ML-230 | Trench Excavation and Bedding Works for Main Lines of Storm Drainage Network for Alignment-RD-03-2 | 2027-01-13 → 2027-01-20 (+7d) | 2027-01-20 → 2027-01-27 (+7d) |
| CO-SD-ML-240 | Pipes Laying Works for Main Lines of Storm Drainage Network for Alignment-RD-03-2 | 2027-01-21 → 2027-01-28 (+7d) | 2027-01-26 → 2027-02-02 (+7d) |
| CO-SD-ML-250 | Trench Backfilling and Compaction Works for Main Lines of Storm Drainage Network for Alignment-RD-03-2 | 2027-01-27 → 2027-02-03 (+7d) | 2027-02-02 → 2027-02-09 (+7d) |
| MV | **Medium Voltage Network** | 2027-02-28 → 2027-03-07 (+7d) | 2027-03-21 → 2027-03-28 (+7d) |
| CW | **Cabling Works** | 2027-02-28 → 2027-03-07 (+7d) | 2027-03-21 → 2027-03-28 (+7d) |
| CO-MV-ML-370 | Trench Excavation and Bedding Works for Medium Voltage Network for Alignment-RD-03-2 | 2027-02-28 → 2027-03-07 (+7d) | 2027-03-04 → 2027-03-15 (+11d) |
| CO-MV-ML-380 | Duct Laying Works for Medium Voltage Network for Alignment-RD-03-2 | 2027-03-07 → 2027-03-17 (+10d) | 2027-03-15 → 2027-03-22 (+7d) |
| CO-MV-ML-390 | Trench Backfilling and Compaction Works for Medium Voltage Network for Alignment-RD-03-2 | 2027-03-17 → 2027-03-24 (+7d) | 2027-03-21 → 2027-03-28 (+7d) |
| LV | **Low Voltage Network** | 2027-03-24 → 2027-03-31 (+7d) | 2027-04-27 → 2027-05-04 (+7d) |
| MLVC | **Main Low Voltage Cables Works ( Cable 300 MM )** | 2027-03-24 → 2027-03-31 (+7d) | 2027-04-17 → 2027-04-24 (+7d) |
| CON-LV-ML-220 | Trench Excavation and Bedding Works for Main Cable of Low Voltage Network for Alignment-RD-03-2 | 2027-03-24 → 2027-03-31 (+7d) | 2027-03-30 → 2027-04-06 (+7d) |
| CON-LV-ML-230 | Cable Laying Works for Main Cable of Low Voltage Network for Alignment-RD-03-2 | 2027-03-31 → 2027-04-07 (+7d) | 2027-04-10 → 2027-04-17 (+7d) |
| CON-LV-ML-240 | Trench Backfilling and Compaction Works for Main Cable of Low Voltage Network for Alignment-RD-03-2 | 2027-04-11 → 2027-04-18 (+7d) | 2027-04-17 → 2027-04-24 (+7d) |
| SLVC | **Service Low Voltage Cables Works ( Cable 70 MM )** | 2027-03-31 → 2027-04-07 (+7d) | 2027-04-27 → 2027-05-04 (+7d) |
| CON-LV-HC-220 | Trench Excavation and Bedding Works for Service Cable of Low Voltage Network for Alignment-RD-03-2 | 2027-03-31 → 2027-04-07 (+7d) | 2027-04-05 → 2027-04-12 (+7d) |
| CON-LV-HC-230 | Cable Laying Works for Service Cable of Low Voltage Network for Alignment-RD-03-2 | 2027-04-11 → 2027-04-18 (+7d) | 2027-04-20 → 2027-04-27 (+7d) |
| CON-LV-HC-240 | Trench Backfilling and Compaction Works for Service Cable of Low Voltage Network for Alignment-RD-03-2 | 2027-04-21 → 2027-04-28 (+7d) | 2027-04-27 → 2027-05-04 (+7d) |
| DP | **Distribution Pillars Works** | 2027-04-01 → 2027-04-08 (+7d) | 2027-04-13 → 2027-04-20 (+7d) |
| CON-LV-DP-220 | Foundation Excavation Works for Distribution Pillars of Low Voltage Network for Alignment-RD-03-2 | 2027-04-01 → 2027-04-08 (+7d) | 2027-04-08 → 2027-04-15 (+7d) |
| CON-LV-DP-230 | Pouring Plain Concrete For Distribution Pillar Units of Low Voltage Network for Alignment-RD-03-2 | 2027-04-10 → 2027-04-17 (+7d) | 2027-04-11 → 2027-04-18 (+7d) |
| CON-LV-DP-240 | Installation Works for Distribution Pillar Units of Low Voltage Network for Alignment-RD-03-2 | 2027-04-12 → 2027-04-19 (+7d) | 2027-04-13 → 2027-04-20 (+7d) |
| SL | **Street Lighting Network** | 2027-03-06 → 2027-03-16 (+10d) | 2027-04-01 → 2027-04-08 (+7d) |
| LP | **Lighting Poles Works** | 2027-03-06 → 2027-03-16 (+10d) | 2027-03-27 → 2027-04-03 (+7d) |
| CO-SL-LP-500 | Installation Works for Lighting Poles Foundation of Street Lighting Network for Alignment-RD-03-2 | 2027-03-06 → 2027-03-16 (+10d) | 2027-03-14 → 2027-03-21 (+7d) |
| CO-SL-LP-510 | Installation Works for Lighting Poles of Street Lighting Network for Alignment-RD-03-2 | 2027-03-15 → 2027-03-22 (+7d) | 2027-03-20 → 2027-03-27 (+7d) |
| CO-SL-LP-520 | Backfilling Works for Lighting Poles of Street Lighting Network for Alignment-RD-03-2 | 2027-03-21 → 2027-03-28 (+7d) | 2027-03-27 → 2027-04-03 (+7d) |
| CW | **Cabling Works** | 2027-03-22 → 2027-03-29 (+7d) | 2027-04-01 → 2027-04-08 (+7d) |
| CO-SL-CL-380 | Cable Laying Works for Street Lighting Network for Alignment-RD-03-2 | 2027-03-22 → 2027-03-29 (+7d) | 2027-03-27 → 2027-04-03 (+7d) |
| CO-SL-CL-390 | Trench Backfilling and Compaction Works for Street Lighting Network for Alignment-RD-03-2 | 2027-03-28 → 2027-04-04 (+7d) | 2027-04-01 → 2027-04-08 (+7d) |
| TE | **Telecom and Light Current Network** | 2027-04-28 → 2027-05-05 (+7d) | 2027-05-01 → 2027-05-08 (+7d) |
| DD | **CCTV, Telephone, MSN, ACs System Works** | 2027-04-28 → 2027-05-05 (+7d) | 2027-05-01 → 2027-05-08 (+7d) |
| CO-TE-CTV-240 | Installation of CCTV, Telephone, ACS and MSN Systems Cables for Alignment-RD-03-2 | 2027-04-28 → 2027-05-05 (+7d) | 2027-05-01 → 2027-05-08 (+7d) |
| RD | **Road Works** | 2027-04-28 → 2027-05-05 (+7d) | 2027-06-10 → 2027-06-17 (+7d) |
| RD | **Pre-Bituminous Construction** | 2027-04-28 → 2027-05-05 (+7d) | 2027-05-09 → 2027-05-22 (+13d) |
| CO-RD-PB-220 | Subgrade Layer for Road Works for Alignment-RD-03-2 | 2027-04-28 → 2027-05-05 (+7d) | 2027-05-03 → 2027-05-10 (+7d) |
| CO-RD-PB-230 | Installation of Aggregate Base Course Layer and Interlock Works for Road Works for Alignment-RD-03-2 | 2027-05-04 → 2027-05-11 (+7d) | 2027-05-09 → 2027-05-22 (+13d) |
| 1 | **Bituminous Construction** | 2027-05-10 → 2027-05-23 (+13d) | 2027-06-01 → 2027-06-08 (+7d) |
| CO-RD-B-240 | Bituminous Base Courses Layers for Road Works for Alignment-RD-03-2 | 2027-05-10 → 2027-05-23 (+13d) | 2027-05-12 → 2027-05-25 (+13d) |
| CON-RD-MR-230 | Preparation of Asphaltic Wearing Course Layer for Roads Network for Alignment-RD-03-2 | 2027-05-30 → 2027-06-06 (+7d) | 2027-06-01 → 2027-06-08 (+7d) |
| LS | **Pavement Works** | 2027-05-13 → 2027-05-26 (+13d) | 2027-06-03 → 2027-06-10 (+7d) |
| CO-RD-PV-240 | Fixing of Curbstone for Sidewalks Pavement for Alignment-RD-03-2 | 2027-05-13 → 2027-05-26 (+13d) | 2027-05-26 → 2027-06-02 (+7d) |
| CO-RD-PV-250 | Fixing of Interlock Tiles for Sidewalks Pavement for Alignment-RD-03-2 | 2027-05-27 → 2027-06-03 (+7d) | 2027-06-03 → 2027-06-10 (+7d) |
| TS | **Traffic Signs Boards and Roads Marking** | 2027-06-05 → 2027-06-12 (+7d) | 2027-06-10 → 2027-06-17 (+7d) |
| CO-RD-F-RM-220 | Application of Road Marking Works For Road Works for Alignment-RD-03-2 | 2027-06-05 → 2027-06-12 (+7d) | 2027-06-07 → 2027-06-14 (+7d) |
| CO-RD-F-TS-160 | Installation Works of Traffic Signs Boards For Road Works for Alignment-RD-03-2 | 2027-06-08 → 2027-06-15 (+7d) | 2027-06-10 → 2027-06-17 (+7d) |
| 3 | **Finishes for Infrastructure Networks** | 2027-03-22 → 2027-03-29 (+7d) | 2027-05-29 → 2027-06-05 (+7d) |
| 11 | **Storm Drainage Network** | 2027-05-05 → 2027-05-12 (+7d) | 2027-05-29 → 2027-06-05 (+7d) |
| TF | **Testing and Finishes** | 2027-05-05 → 2027-05-12 (+7d) | 2027-05-29 → 2027-06-05 (+7d) |

| ID | Task | Start | Finish |
| --- | --- | --- | --- |
| CO-SD-MH-TF-290 | Testing Works for Manholes of Storm Drainage Network for Alignment-RD-03-2 | 2027-05-05 → 2027-05-12 (+7d) | 2027-05-11 → 2027-05-24 (+13d) |
| CO-SD-CB-TF-260 | Testing Works for Catch Basins of Storm Drainage Network for Alignment-RD-03-2 | 2027-05-13 → 2027-05-26 (+13d) | 2027-05-29 → 2027-06-05 (+7d) |
| 14 | **Medium Voltage Network** | 2027-03-22 → 2027-03-29 (+7d) | 2027-03-28 → 2027-04-04 (+7d) |
| TT | **Termination and Testing Works** | 2027-03-22 → 2027-03-29 (+7d) | 2027-03-28 → 2027-04-04 (+7d) |
| CO-MV-TF-260 | Testing and Termination Works of Medium Voltage Network for Alignment-RD-03-2 | 2027-03-22 → 2027-03-29 (+7d) | 2027-03-28 → 2027-04-04 (+7d) |
| 6 | **Low Voltage Network** | 2027-04-14 → 2027-04-21 (+7d) | 2027-05-05 → 2027-05-12 (+7d) |
| TT | **Termination and Testing Works** | 2027-04-14 → 2027-04-21 (+7d) | 2027-05-05 → 2027-05-12 (+7d) |
| CON-LV-TT-190 | Testing and Termination Works for Distribution Pillars Units of Low Voltage Network for Alignment-RD-03-2 | 2027-04-14 → 2027-04-21 (+7d) | 2027-04-20 → 2027-04-27 (+7d) |
| CON-LV-TT-180 | Testing and Termination Works for Substation Low Voltage Panel Boards of Low Voltage Network for Alignment-RD-03-2 | 2027-04-28 → 2027-05-05 (+7d) | 2027-05-05 → 2027-05-12 (+7d) |
| 1 | **Earthing System Works** | 2027-04-21 → 2027-04-28 (+7d) | 2027-04-22 → 2027-04-29 (+7d) |
| CON-LV-ES-140 | Earthing System Works for Distribution Pillars Units of Low Voltage Network for Alignment-RD-03-2 | 2027-04-21 → 2027-04-28 (+7d) | 2027-04-22 → 2027-04-29 (+7d) |
| 12 | **Street Lighting Network** | 2027-04-06 → 2027-04-13 (+7d) | 2027-04-22 → 2027-04-29 (+7d) |
| TR | **Termination and Testing Works** | 2027-04-06 → 2027-04-13 (+7d) | 2027-04-22 → 2027-04-29 (+7d) |
| CO-SL-LP-530 | Installation Works for Lighting Fixtures With Drop Wire of Street Lighting Network for Alignment-RD-03-2 | 2027-04-06 → 2027-04-13 (+7d) | 2027-04-12 → 2027-04-19 (+7d) |
| CO-SL-TF-530 | Testing Works for Lighting Poles of Street Lighting Network for Alignment-RD-03-2 | 2027-04-17 → 2027-04-24 (+7d) | 2027-04-22 → 2027-04-29 (+7d) |
| ES | **Earthing System Works** | 2027-04-17 → 2027-04-24 (+7d) | 2027-04-21 → 2027-04-28 (+7d) |
| CO-SL-ES-300 | Install Earthing System Works for Lighting Poles of Street Lighting Network for Alignment-RD-03-2 | 2027-04-17 → 2027-04-24 (+7d) | 2027-04-19 → 2027-04-26 (+7d) |
| CO-SL-ES-310 | Install Earthing System Works for Lighting Panel Boards of Street Lighting Network for Alignment-RD-03-2 | 2027-04-20 → 2027-04-27 (+7d) | 2027-04-21 → 2027-04-28 (+7d) |
| 3 | **Telecom and Light Current Network** | 2027-05-02 → 2027-05-09 (+7d) | 2027-05-05 → 2027-05-12 (+7d) |
| 1 | **Testing and Finishes** | 2027-05-02 → 2027-05-09 (+7d) | 2027-05-05 → 2027-05-12 (+7d) |
| CO-TE-CTV-TF-320 | Testing and Interface modules with CCTV, Telephone, MSN and Access Control for Alignment-RD-03-2 | 2027-05-02 → 2027-05-09 (+7d) | 2027-05-05 → 2027-05-12 (+7d) |
| 4 | **Alignment-RD-03-3** | 2026-11-02 → 2026-11-09 (+7d) | 2027-05-22 → 2027-05-29 (+7d) |
| EW | **Earthworks** | 2026-11-02 → 2026-11-09 (+7d) | 2026-11-14 → 2026-11-21 (+7d) |
| EW | **Earthworks** | 2026-11-02 → 2026-11-09 (+7d) | 2026-11-14 → 2026-11-21 (+7d) |
| CO-EW-230 | Excavation and Backfilling Works Upto Design Level for Earthworks for Alignment-RD-03-3 | 2026-11-02 → 2026-11-09 (+7d) | 2026-11-14 → 2026-11-21 (+7d) |
| SD | **Storm Drainage Network** | 2026-12-02 → 2026-12-09 (+7d) | 2026-12-13 → 2026-12-20 (+7d) |
| ML | **Main Line Sections** | 2026-12-02 → 2026-12-09 (+7d) | 2026-12-13 → 2026-12-20 (+7d) |
| CO-SD-ML-200 | Trench Excavation and Bedding Works for Main Lines of Storm Drainage Network for Alignment-RD-03-3 | 2026-12-02 → 2026-12-09 (+7d) | 2026-12-05 → 2026-12-12 (+7d) |
| CO-SD-ML-210 | Pipes Laying Works for Main Lines of Storm Drainage Network for Alignment-RD-03-3 | 2026-12-06 → 2026-12-13 (+7d) | 2026-12-08 → 2026-12-15 (+7d) |
| CO-SD-ML-220 | Trench Backfilling and Compaction Works for Main Lines of Storm Drainage Network for Alignment-RD-03-3 | 2026-12-10 → 2026-12-17 (+7d) | 2026-12-13 → 2026-12-20 (+7d) |
| TSE | **Treated Sewage Effluent (Tse)** | 2026-12-14 → 2026-12-21 (+7d) | 2027-01-20 → 2027-01-27 (+7d) |
| CO-TSE-ML-300 | Trench Excavation and Bedding Works for Main Lines of Treated Sewage Effluent (Tse) for Alignment-RD-03-3 | 2026-12-14 → 2026-12-21 (+7d) | 2026-12-26 → 2027-01-02 (+7d) |
| CO-TSE-ML-310 | Pipes Laying Works for Main Lines of Treated Sewage Effluent (Tse) for Alignment-RD-03-3 | 2026-12-27 → 2027-01-03 (+7d) | 2027-01-07 → 2027-01-14 (+7d) |
| CO-TSE-ML-330 | Trench Backfilling and Compaction Works for Treated Sewage Effluent (Tse) for Alignment-RD-03-3 | 2027-01-09 → 2027-01-16 (+7d) | 2027-01-20 → 2027-01-27 (+7d) |
| PW | **Potable Water Network** | 2027-01-21 → 2027-01-28 (+7d) | 2027-02-27 → 2027-03-06 (+7d) |
| ML | **Main Line Sections** | 2027-01-21 → 2027-01-28 (+7d) | 2027-02-24 → 2027-03-03 (+7d) |
| CO-PW-ML-200 | Trench Excavation and Bedding Works for Main Lines of Potable Water Network for Alignment-RD-03-3 | 2027-01-21 → 2027-01-28 (+7d) | 2027-02-01 → 2027-02-08 (+7d) |
| CO-PW-ML-210 | Pipes Laying and accessories for Main Lines of Potable Water Network for Alignment-RD-03-3 | 2027-02-02 → 2027-02-09 (+7d) | 2027-02-13 → 2027-02-20 (+7d) |
| CO-PW-ML-220 | Trench Backfilling and Compaction Works for Main Lines of Potable Water Network for Alignment-RD-03-3 | 2027-02-14 → 2027-02-21 (+7d) | 2027-02-24 → 2027-03-03 (+7d) |
| VC | **Valve Chamber** | 2027-01-21 → 2027-01-28 (+7d) | 2027-02-27 → 2027-03-06 (+7d) |
| CO-PW-VC-290 | Excavation Works for Main Line Valves and Valve Chambers of Potable Water Network for Alignment-RD-03-3 | 2027-01-21 → 2027-01-28 (+7d) | 2027-02-01 → 2027-02-08 (+7d) |
| CO-PW-VC210 | Installation of Valve Chambers of Potable Water Network for Alignment-RD-03-3 | 2027-02-02 → 2027-02-09 (+7d) | 2027-02-13 → 2027-02-20 (+7d) |
| CO-PW-VC-300 | Installation Works for Valves of Potable Water Network for Alignment-RD-03-3 | 2027-02-14 → 2027-02-21 (+7d) | 2027-02-23 → 2027-03-02 (+7d) |
| CO-PW-VC-310 | Backfilling Works for Main Line Valves and Valve Chambers of Potable Water Network for Alignment-RD-03-3 | 2027-02-24 → 2027-03-03 (+7d) | 2027-02-27 → 2027-03-06 (+7d) |
| FH | **Fire Hydrant** | 2027-02-02 → 2027-02-09 (+7d) | 2027-02-27 → 2027-03-06 (+7d) |
| CO-PW-FH-230 | Excavation Works for Fire Hydrants of Potable Water Network for Alignment-RD-03-3 | 2027-02-02 → 2027-02-09 (+7d) | 2027-02-13 → 2027-02-20 (+7d) |
| CO-PW-FH-240 | Installation Works for Fire Hydrant of Potable Water Network for Alignment-RD-03-3 | 2027-02-14 → 2027-02-21 (+7d) | 2027-02-24 → 2027-03-03 (+7d) |
| CO-PW-FH-250 | Trench Backfilling and Compaction Works for Fire Hydrants of Potable Water Network for Alignment-RD-03-3 | 2027-02-25 → 2027-03-04 (+7d) | 2027-02-27 → 2027-03-06 (+7d) |
| IR | **Irrigation Network** | 2027-02-02 → 2027-02-09 (+7d) | 2027-02-27 → 2027-03-06 (+7d) |
| ML | **Main Line Pipes** | 2027-02-02 → 2027-02-09 (+7d) | 2027-02-27 → 2027-03-06 (+7d) |
| CO-IR-ML-350 | Trench Excavation and Bedding Works for Main Lines of Irrigation Network for Alignment-RD-03-3 | 2027-02-02 → 2027-02-09 (+7d) | 2027-02-13 → 2027-02-20 (+7d) |
| CO-IR-ML-360 | Pipes Laying Works for Main Lines of Irrigation Network for Alignment-RD-03-3 | 2027-02-14 → 2027-02-21 (+7d) | 2027-02-16 → 2027-02-23 (+7d) |
| CO-IR-ML-370 | Installation Works for Main Line Valves of Irrigation Network for Alignment-RD-03-3 | 2027-02-17 → 2027-02-24 (+7d) | 2027-02-20 → 2027-02-27 (+7d) |
| CO-IR-ML-390 | Installation Works for Bulbblers And Sprinkler and Irrigation Control System of Irrigation Network for Alignment-RD-03-3 | 2027-02-21 → 2027-02-28 (+7d) | 2027-02-23 → 2027-03-02 (+7d) |
| CO-IR-ML-380 | Trench Backfilling and Compaction Works for Main Lines of Irrigation Network for Alignment-RD-03-3 | 2027-02-24 → 2027-03-03 (+7d) | 2027-02-27 → 2027-03-06 (+7d) |
| MV | **Medium Voltage Network** | 2027-03-06 → 2027-03-16 (+10d) | 2027-03-22 → 2027-03-29 (+7d) |
| CW | **Cabling Works** | 2027-03-06 → 2027-03-16 (+10d) | 2027-03-22 → 2027-03-29 (+7d) |
| CO-MV-ML-340 | Trench Excavation and Bedding Works for Medium Voltage Network for Alignment-RD-03-3 | 2027-03-06 → 2027-03-16 (+10d) | 2027-03-08 → 2027-03-18 (+10d) |
| CO-MV-ML-350 | Duct Laying Works for Medium Voltage Network for Alignment-RD-03-3 | 2027-03-16 → 2027-03-23 (+7d) | 2027-03-18 → 2027-03-25 (+7d) |
| CO-MV-ML-360 | Trench Backfilling and Compaction Works for Medium Voltage Network for Alignment-RD-03-3 | 2027-03-20 → 2027-03-27 (+7d) | 2027-03-22 → 2027-03-29 (+7d) |
| LV | **Low Voltage Network** | 2027-03-23 → 2027-03-30 (+7d) | 2027-04-24 → 2027-05-01 (+7d) |
| MLVC | **Main Low Voltage Cables Works ( Cable 300 MM )** | 2027-03-23 → 2027-03-30 (+7d) | 2027-04-12 → 2027-04-19 (+7d) |
| CON-LV-ML-190 | Trench Excavation and Bedding Works for Main Cable of Low Voltage Network for Alignment-RD-03-3 | 2027-03-23 → 2027-03-30 (+7d) | 2027-03-30 → 2027-04-06 (+7d) |
| CON-LV-ML-200 | Cable Laying Works for Main Cable of Low Voltage Network for Alignment-RD-03-3 | 2027-03-31 → 2027-04-07 (+7d) | 2027-04-07 → 2027-04-14 (+7d) |
| CON-LV-ML-210 | Trench Backfilling and Compaction Works for Main Cable of Low Voltage Network for Alignment-RD-03-3 | 2027-04-08 → 2027-04-15 (+7d) | 2027-04-12 → 2027-04-19 (+7d) |
| SLVC | **Service Low Voltage Cables Works ( Cable 70 MM )** | 2027-03-31 → 2027-04-07 (+7d) | 2027-04-19 → 2027-04-26 (+7d) |
| CON-LV-HC-190 | Trench Excavation and Bedding Works for Service Cable of Low Voltage Network for Alignment-RD-03-3 | 2027-03-31 → 2027-04-07 (+7d) | 2027-04-07 → 2027-04-14 (+7d) |
| CON-LV-HC-200 | Cable Laying Works for Service Cable of Low Voltage Network for Alignment-RD-03-3 | 2027-04-08 → 2027-04-15 (+7d) | 2027-04-15 → 2027-04-22 (+7d) |
| CON-LV-HC-210 | Trench Backfilling and Compaction Works for Service Cable of Low Voltage Network for Alignment-RD-03-3 | 2027-04-17 → 2027-04-24 (+7d) | 2027-04-19 → 2027-04-26 (+7d) |
| DP | **Distribution Pillars Works** | 2027-04-20 → 2027-04-27 (+7d) | 2027-04-24 → 2027-05-01 (+7d) |

| ID | Task | Start | Finish |
| --- | --- | --- | --- |
| CON-LV-DP-190 | Installation Works for Distribution Pillar Units of Low Voltage Network for Alignment-RD-03-3 | 2027-04-20 → 2027-04-27 (+7d) | 2027-04-24 → 2027-05-01 (+7d) |
| SL | **Street Lighting Network** | 2027-03-23 → 2027-03-30 (+7d) | 2027-04-12 → 2027-04-19 (+7d) |
| LP | **Lighting Poles Works** | 2027-03-23 → 2027-03-30 (+7d) | 2027-04-12 → 2027-04-19 (+7d) |
| CO-SL-LP-450 | Installation Works for Lighting Poles Foundation of Street Lighting Network for Alignment-RD-03-3 | 2027-03-23 → 2027-03-30 (+7d) | 2027-03-29 → 2027-04-05 (+7d) |
| CO-SL-LP-460 | Installation Works for Lighting Poles of Street Lighting Network for Alignment-RD-03-3 | 2027-03-30 → 2027-04-06 (+7d) | 2027-04-05 → 2027-04-12 (+7d) |
| CO-SL-LP-480 | Backfilling Works for Lighting Poles of Street Lighting Network for Alignment-RD-03-3 | 2027-04-06 → 2027-04-13 (+7d) | 2027-04-12 → 2027-04-19 (+7d) |
| CW | **Cabling Works** | 2027-04-06 → 2027-04-13 (+7d) | 2027-04-12 → 2027-04-19 (+7d) |
| CO-SL-CL-350 | Cable Laying Works for Street Lighting Network for Alignment-RD-03-3 | 2027-04-06 → 2027-04-13 (+7d) | 2027-04-12 → 2027-04-19 (+7d) |
| CO-SL-CL-360 | Trench Backfilling and Compaction Works for Street Lighting Network for Alignment-RD-03-3 | 2027-04-06 → 2027-04-13 (+7d) | 2027-04-12 → 2027-04-19 (+7d) |
| TE | **Telecom and Light Current Network** | 2027-04-01 → 2027-04-08 (+7d) | 2027-05-01 → 2027-05-08 (+7d) |
| PD | **Ducts Works** | 2027-04-20 → 2027-04-27 (+7d) | 2027-05-01 → 2027-05-08 (+7d) |
| CO-TE-DW-230 | Pipes Laying Works for Ducts of Telecom Network for Alignment-RD-03-3 | 2027-04-20 → 2027-04-27 (+7d) | 2027-04-26 → 2027-05-03 (+7d) |
| CO-TE-DW-240 | Trench Backfilling and Compaction Works for Ducts of Telecom Network for Alignment-RD-03-3 | 2027-04-27 → 2027-05-04 (+7d) | 2027-05-01 → 2027-05-08 (+7d) |
| MH | **Manholes Works** | 2027-04-01 → 2027-04-08 (+7d) | 2027-04-10 → 2027-04-17 (+7d) |
| CO-TE-MH-230 | Excavation Works for Manholes of Telecom Network for Alignment-RD-03-3 | 2027-04-01 → 2027-04-08 (+7d) | 2027-04-03 → 2027-04-10 (+7d) |
| CO-TE-MH-240 | Installation Works for Manholes of Telecom Network for Alignment-RD-03-3 | 2027-04-04 → 2027-04-11 (+7d) | 2027-04-06 → 2027-04-13 (+7d) |
| CO-TE-MH-250 | Backfilling Works for Manholes of Telecom Network for Alignment-RD-03-3 | 2027-04-07 → 2027-04-14 (+7d) | 2027-04-10 → 2027-04-17 (+7d) |
| DD | **CCTV, Telephone, MSN, ACs System Works** | 2027-04-11 → 2027-04-18 (+7d) | 2027-04-13 → 2027-04-20 (+7d) |
| CO-TE-CTV-210 | Installation of CCTV, Telephone, ACS and MSN Systems Cables for Alignment-RD-03-3 | 2027-04-11 → 2027-04-18 (+7d) | 2027-04-13 → 2027-04-20 (+7d) |
| RD | **Road Works** | 2027-04-27 → 2027-05-04 (+7d) | 2027-05-05 → 2027-05-12 (+7d) |
| LS | **Pavement Works** | 2027-04-27 → 2027-05-04 (+7d) | 2027-05-01 → 2027-05-08 (+7d) |
| CO-RD-PV-220 | Fixing of Curbstone for Sidewalks Pavement for Alignment-RD-03-3 | 2027-04-27 → 2027-05-04 (+7d) | 2027-05-01 → 2027-05-08 (+7d) |
| CO-RD-PV-230 | Fixing of Interlock Tiles for Sidewalks Pavement for Alignment-RD-03-3 | 2027-04-27 → 2027-05-04 (+7d) | 2027-05-01 → 2027-05-08 (+7d) |
| TS | **Traffic Signs Boards and Roads Marking** | 2027-04-27 → 2027-05-04 (+7d) | 2027-05-05 → 2027-05-12 (+7d) |
| CO-RD-F-RM-210 | Application of Road Marking Works For Road Works for Alignment-RD-03-3 | 2027-04-27 → 2027-05-04 (+7d) | 2027-04-29 → 2027-05-06 (+7d) |
| CO-RD-F-TS-150 | Installation Works of Traffic Signs Boards For Road Works for Alignment-RD-03-3 | 2027-05-02 → 2027-05-09 (+7d) | 2027-05-05 → 2027-05-12 (+7d) |
| 3 | **Finishes for Infrastructure Networks** | 2027-03-23 → 2027-03-30 (+7d) | 2027-05-22 → 2027-05-29 (+7d) |
| 11 | **Storm Drainage Network** | 2027-04-29 → 2027-05-06 (+7d) | 2027-05-04 → 2027-05-11 (+7d) |
| TF | **Testing and Finishes** | 2027-04-29 → 2027-05-06 (+7d) | 2027-05-04 → 2027-05-11 (+7d) |
| CO-SD-ML-TF-130 | Testing Work for Pipes of Storm Drainage Network for Alignment-RD-03-3 | 2027-04-29 → 2027-05-06 (+7d) | 2027-05-04 → 2027-05-11 (+7d) |
| 9 | **Potable Water Network** | 2027-04-20 → 2027-04-27 (+7d) | 2027-04-27 → 2027-05-04 (+7d) |
| TF | **Testing and Finishes** | 2027-04-20 → 2027-04-27 (+7d) | 2027-04-27 → 2027-05-04 (+7d) |
| CO-PW-TF-200 | Fire Hydrant Finishies (S.Box + Safety + Marker Post ) of Potable Water Network for Alignment-RD-03-3 | 2027-04-20 → 2027-04-27 (+7d) | 2027-04-22 → 2027-04-29 (+7d) |
| CO-PW-TF-190 | Testing of Potable Water Network for Alignment-RD-03-3 | 2027-04-24 → 2027-05-01 (+7d) | 2027-04-26 → 2027-05-03 (+7d) |
| CO-PW-TF-210 | Final Finishes works and Covers for Valves and Valve Chambers for Alignment-RD-03-3 | 2027-04-24 → 2027-05-01 (+7d) | 2027-04-27 → 2027-05-04 (+7d) |
| 1 | **Treated Sewage Effluent (Tse)** | 2027-05-10 → 2027-05-23 (+13d) | 2027-05-22 → 2027-05-29 (+7d) |
| TF | **Testing and Finishes** | 2027-05-10 → 2027-05-23 (+13d) | 2027-05-22 → 2027-05-29 (+7d) |
| CO-TSE-TF-200 | Final Testing (pressure tests) of Treated Sewage Effluent (Tse) for Alignment-RD-03-3 | 2027-05-10 → 2027-05-23 (+13d) | 2027-05-22 → 2027-05-29 (+7d) |
| 13 | **Irrigation Network** | 2027-04-24 → 2027-05-01 (+7d) | 2027-04-29 → 2027-05-06 (+7d) |
| TF | **Testing and Finishes** | 2027-04-24 → 2027-05-01 (+7d) | 2027-04-29 → 2027-05-06 (+7d) |
| CO-IR-TF-210 | Final Testing (pressure tests) of Irrigation Network for Alignment-RD-03-3 | 2027-04-24 → 2027-05-01 (+7d) | 2027-04-29 → 2027-05-06 (+7d) |
| 14 | **Medium Voltage Network** | 2027-03-23 → 2027-03-30 (+7d) | 2027-03-29 → 2027-04-05 (+7d) |
| TT | **Termination and Testing Works** | 2027-03-23 → 2027-03-30 (+7d) | 2027-03-29 → 2027-04-05 (+7d) |
| CO-MV-TF-250 | Testing and Termination Works of Medium Voltage Network for Alignment-RD-03-3 | 2027-03-23 → 2027-03-30 (+7d) | 2027-03-29 → 2027-04-05 (+7d) |
| 6 | **Low Voltage Network** | 2027-04-25 → 2027-05-02 (+7d) | 2027-05-01 → 2027-05-08 (+7d) |
| TT | **Termination and Testing Works** | 2027-04-25 → 2027-05-02 (+7d) | 2027-05-01 → 2027-05-08 (+7d) |
| CON-LV-TT-160 | Testing and Termination Works for Substation Low Voltage Panel Boards of Low Voltage Network for Alignment-RD-03-3 | 2027-04-25 → 2027-05-02 (+7d) | 2027-05-01 → 2027-05-08 (+7d) |
| 12 | **Street Lighting Network** | 2027-04-20 → 2027-04-27 (+7d) | 2027-05-09 → 2027-05-22 (+13d) |
| TR | **Termination and Testing Works** | 2027-04-20 → 2027-04-27 (+7d) | 2027-05-09 → 2027-05-22 (+13d) |
| CO-SL-LP-470 | Installation Works for Lighting Fixtures With Drop Wire of Street Lighting Network for Alignment-RD-03-3 | 2027-04-20 → 2027-04-27 (+7d) | 2027-04-26 → 2027-05-03 (+7d) |
| CO-SL-TF-490 | Testing Works for Lighting Poles of Street Lighting Network for Alignment-RD-03-3 | 2027-05-03 → 2027-05-10 (+7d) | 2027-05-09 → 2027-05-22 (+13d) |
| ES | **Earthing System Works** | 2027-04-20 → 2027-04-27 (+7d) | 2027-05-02 → 2027-05-09 (+7d) |
| CO-SL-ES-280 | Install Earthing System Works for Lighting Poles of Street Lighting Network for Alignment-RD-03-3 | 2027-04-20 → 2027-04-27 (+7d) | 2027-04-26 → 2027-05-03 (+7d) |
| CO-SL-ES-290 | Install Earthing System Works for Lighting Panel Boards of Street Lighting Network for Alignment-RD-03-3 | 2027-04-26 → 2027-05-03 (+7d) | 2027-05-02 → 2027-05-09 (+7d) |
| 3 | **Telecom and Light Current Network** | 2027-04-15 → 2027-04-22 (+7d) | 2027-04-28 → 2027-05-05 (+7d) |
| 1 | **Testing and Finishes** | 2027-04-15 → 2027-04-22 (+7d) | 2027-04-28 → 2027-05-05 (+7d) |
| CO-TE-CTV-TF-260 | Testing and Interface modules with Telecom for Alignment-RD-03-3 | 2027-04-15 → 2027-04-22 (+7d) | 2027-04-21 → 2027-04-28 (+7d) |
| CO-TE-CTV-TF-340 | Testing and Interface modules with CCTV, Telephone, MSN and Access Control for Alignment-RD-03-3 | 2027-04-22 → 2027-04-29 (+7d) | 2027-04-28 → 2027-05-05 (+7d) |
| EX | **External** |  | 2027-05-04 → 2027-05-11 (+7d) |
| 2 | **External Road - 1 - 1** |  | 2027-05-03 → 2027-05-10 (+7d) |
| EW | **Earthworks** |  | 2026-12-21 → 2026-12-28 (+7d) |
| EW | **Earthworks** |  | 2026-12-21 → 2026-12-28 (+7d) |
| CO-EW-250_R | Excavation and Backfilling Works Upto Design Level for Earthworks for External Road - 1 - 1(Remaining) | 2026-12-13 → 2026-12-20 (+7d) | 2026-12-21 → 2026-12-28 (+7d) |
| RD | **Road Works** | 2027-03-21 → 2027-03-28 (+7d) | 2027-05-03 → 2027-05-10 (+7d) |
| 3 | **Road 01** | 2027-03-21 → 2027-03-28 (+7d) | 2027-05-03 → 2027-05-10 (+7d) |
| RD | **Pre-Bituminous Construction** | 2027-03-21 → 2027-03-28 (+7d) | 2027-04-08 → 2027-04-15 (+7d) |
| CO-RD-PB-240 | Subgrade Layer for Road Works for External Road - 1 - 1 | 2027-03-21 → 2027-03-28 (+7d) | 2027-03-29 → 2027-04-05 (+7d) |
| CO-RD-PB-250 | Aggregate Base Course Layer for Road Works for External Road - 1 - 1 | 2027-03-30 → 2027-04-06 (+7d) | 2027-04-08 → 2027-04-15 (+7d) |
| 1 | **Bituminous Construction** | 2027-04-10 → 2027-04-17 (+7d) | 2027-04-18 → 2027-04-25 (+7d) |
| CO-RD-B-260 | Bituminous Base Courses Layers for Road Works for External Road - 1 - 1 | 2027-04-10 → 2027-04-17 (+7d) | 2027-04-13 → 2027-04-20 (+7d) |

| ID | Task | Start | Finish | Complete |
| --- | --- | --- | --- | --- |
| CON-RD-MR-250 | Preparation of Asphaltic Wearing Course Layer for Roads Network for External Road - 1 - 1 | 2027-04-14 → 2027-04-21 (+7d) | 2027-04-18 → 2027-04-25 (+7d) |  |
| LS | **Pavement Works** | 2027-04-14 → 2027-04-21 (+7d) | 2027-04-29 → 2027-05-06 (+7d) |  |
| CO-RD-PV-260 | Fixing of Curbstone for Sidewalks Pavement for External Road - 1 - 1 | 2027-04-14 → 2027-04-21 (+7d) | 2027-04-22 → 2027-04-29 (+7d) |  |
| CO-RD-PV-270 | Fixing of Interlock Tiles for Sidewalks Pavement for External Road - 1 - 1 | 2027-04-24 → 2027-05-01 (+7d) | 2027-04-29 → 2027-05-06 (+7d) |  |
| TS | **Traffic Signs Boards and Roads Marking** | 2027-05-01 → 2027-05-08 (+7d) | 2027-05-03 → 2027-05-10 (+7d) |  |
| CO-RD-F-RM-230 | Application of Road Marking Works For Road Works for External Road - 1 - 1 | 2027-05-01 → 2027-05-08 (+7d) | 2027-05-02 → 2027-05-09 (+7d) |  |
| CO-RD-F-TS-170 | Installation Works of Traffic Signs Boards For Road Works for External Road - 1 - 1 | 2027-05-03 → 2027-05-10 (+7d) | 2027-05-03 → 2027-05-10 (+7d) |  |
| 4 | **External Road - 1 - 2** |  | 2027-05-04 → 2027-05-11 (+7d) |  |
| EW | **Earthworks** |  | 2027-01-11 → 2027-01-18 (+7d) |  |
| EW | **Earthworks** |  | 2027-01-11 → 2027-01-18 (+7d) |  |
| CO-EW-280_R | Excavation and Backfilling Works Upto Design Level for Earthworks for External Road - 1 - 2(Remaining) |  | 2027-01-11 → 2027-01-18 (+7d) |  |
| RD | **Road Works** | 2027-03-21 → 2027-03-28 (+7d) | 2027-05-04 → 2027-05-11 (+7d) |  |
| 3 | **Road 01** | 2027-03-21 → 2027-03-28 (+7d) | 2027-05-04 → 2027-05-11 (+7d) |  |
| RD | **Pre-Bituminous Construction** | 2027-03-21 → 2027-03-28 (+7d) | 2027-04-03 → 2027-04-10 (+7d) |  |
| CO-RD-PB-300 | Subgrade Layer for Road Works for External Road - 1 - 2 | 2027-03-21 → 2027-03-28 (+7d) | 2027-03-27 → 2027-04-03 (+7d) |  |
| CO-RD-PB-310 | Aggregate Base Course Layer for Road Works for External Road - 1 - 2 | 2027-03-28 → 2027-04-04 (+7d) | 2027-04-03 → 2027-04-10 (+7d) |  |
| 1 | **Bituminous Construction** | 2027-04-04 → 2027-04-11 (+7d) | 2027-04-15 → 2027-04-22 (+7d) |  |
| CO-RD-B-320 | Bituminous Base Courses Layers for Road Works for External Road - 1 - 2 | 2027-04-04 → 2027-04-11 (+7d) | 2027-04-11 → 2027-04-18 (+7d) |  |
| CON-RD-MR-310 | Preparation of Asphaltic Wearing Course Layer for Roads Network for External Road - 1 - 2 | 2027-04-12 → 2027-04-19 (+7d) | 2027-04-15 → 2027-04-22 (+7d) |  |
| LS | **Pavement Works** | 2027-04-13 → 2027-04-20 (+7d) | 2027-04-26 → 2027-05-03 (+7d) |  |
| CO-RD-PV-320 | Fixing of Curbstone for Sidewalks Pavement for External Road - 1 - 2 | 2027-04-13 → 2027-04-20 (+7d) | 2027-04-19 → 2027-04-26 (+7d) |  |
| CO-RD-PV-330 | Fixing of Interlock Tiles for Sidewalks Pavement for External Road - 1 - 2 | 2027-04-20 → 2027-04-27 (+7d) | 2027-04-26 → 2027-05-03 (+7d) |  |
| TS | **Traffic Signs Boards and Roads Marking** | 2027-04-27 → 2027-05-04 (+7d) | 2027-05-04 → 2027-05-11 (+7d) |  |
| CO-RD-F-RM-260 | Application of Road Marking Works For Road Works for External Road - 1 - 2 | 2027-04-27 → 2027-05-04 (+7d) | 2027-05-01 → 2027-05-08 (+7d) |  |
| CO-RD-F-TS-200 | Installation Works of Traffic Signs Boards For Road Works for External Road - 1 - 2 | 2027-05-02 → 2027-05-09 (+7d) | 2027-05-04 → 2027-05-11 (+7d) |  |
| 1 | **External Road - 2** |  | 2027-05-04 → 2027-05-11 (+7d) |  |
| EW | **Earthworks** |  | 2027-02-04 → 2027-02-11 (+7d) |  |
| EW | **Earthworks** |  | 2027-02-04 → 2027-02-11 (+7d) |  |
| CO-EW-260_R | Excavation and Backfilling Works Upto Design Level for Earthworks for External Road - 2(Remaining) | 2027-01-12 → 2027-01-19 (+7d) | 2027-02-04 → 2027-02-11 (+7d) |  |
| RD | **Road Works** | 2027-03-14 → 2027-03-21 (+7d) | 2027-05-04 → 2027-05-11 (+7d) |  |
| 3 | **Road 01** | 2027-03-14 → 2027-03-21 (+7d) | 2027-05-04 → 2027-05-11 (+7d) |  |
| RD | **Pre-Bituminous Construction** | 2027-03-14 → 2027-03-21 (+7d) | 2027-03-21 → 2027-03-28 (+7d) |  |
| CO-RD-PB-260 | Subgrade Layer for Road Works for External Road - 2 | 2027-03-14 → 2027-03-21 (+7d) | 2027-03-21 → 2027-03-28 (+7d) |  |
| CO-RD-PB-270 | Aggregate Base Course Layer for Road Works for External Road - 2 | 2027-03-17 → 2027-03-24 (+7d) | 2027-03-21 → 2027-03-28 (+7d) |  |
| 1 | **Bituminous Construction** | 2027-03-22 → 2027-03-29 (+7d) | 2027-04-13 → 2027-04-20 (+7d) |  |
| CO-RD-B-280 | Bituminous Base Courses Layers for Road Works for External Road - 2 | 2027-03-22 → 2027-03-29 (+7d) | 2027-04-01 → 2027-04-08 (+7d) |  |
| CON-RD-MR-270 | Preparation of Asphaltic Wearing Course Layer for Roads Network for External Road - 2 | 2027-04-03 → 2027-04-10 (+7d) | 2027-04-13 → 2027-04-20 (+7d) |  |
| LS | **Pavement Works** | 2027-04-13 → 2027-04-20 (+7d) | 2027-04-22 → 2027-04-29 (+7d) |  |
| CO-RD-PV-280 | Fixing of Curbstone for Sidewalks Pavement for External Road - 2 | 2027-04-13 → 2027-04-20 (+7d) | 2027-04-22 → 2027-04-29 (+7d) |  |
| CO-RD-PV-290 | Fixing of Interlock Tiles for Sidewalks Pavement for External Road - 2 | 2027-04-13 → 2027-04-20 (+7d) | 2027-04-22 → 2027-04-29 (+7d) |  |
| TS | **Traffic Signs Boards and Roads Marking** | 2027-04-24 → 2027-05-01 (+7d) | 2027-05-04 → 2027-05-11 (+7d) |  |
| CO-RD-F-RM-240 | Application of Road Marking Works For Road Works for External Road - 2 | 2027-04-24 → 2027-05-01 (+7d) | 2027-05-04 → 2027-05-11 (+7d) |  |
| CO-RD-F-TS-180 | Installation Works of Traffic Signs Boards For Road Works for External Road - 2 | 2027-04-26 → 2027-05-03 (+7d) | 2027-04-27 → 2027-05-04 (+7d) |  |
| 3 | **External Road - 3** |  | 2027-05-04 → 2027-05-11 (+7d) |  |
| EW | **Earthworks** |  | 2027-02-13 → 2027-02-20 (+7d) |  |
| EW | **Earthworks** |  | 2027-02-13 → 2027-02-20 (+7d) |  |
| CO-EW-270_R | Excavation and Backfilling Works Upto Design Level for Earthworks for External Road - 3(Remaining) |  | 2027-02-13 → 2027-02-20 (+7d) |  |
| TE | **Telecom and Light Current Network** | 2027-01-26 → 2027-02-02 (+7d) | 2027-03-20 → 2027-03-27 (+7d) |  |
| MH | **Manholes Works** | 2027-01-26 → 2027-02-02 (+7d) | 2027-03-13 → 2027-03-20 (+7d) |  |
| CO-TE-MH-290 | Excavation Works for Manholes of Telecom Network for External Road - 3 | 2027-01-26 → 2027-02-02 (+7d) | 2027-02-15 → 2027-02-22 (+7d) |  |
| CO-TE-MH-300 | Installation Works for Manholes of Telecom Network for External Road - 3 | 2027-02-16 → 2027-02-23 (+7d) | 2027-03-13 → 2027-03-20 (+7d) |  |
| CO-TE-MH-310 | Backfilling Works for Manholes of Telecom Network for External Road - 3 | 2027-03-03 → 2027-03-14 (+11d) | 2027-03-13 → 2027-03-20 (+7d) |  |
| 1 | **Testing and Finishes** | 2027-03-14 → 2027-03-21 (+7d) | 2027-03-20 → 2027-03-27 (+7d) |  |
| CO-TE-CTV-TF-360 | Testing and Interface modules with Telecom for External Road - 3 | 2027-03-14 → 2027-03-21 (+7d) | 2027-03-20 → 2027-03-27 (+7d) |  |
| RD | **Road Works** |  | 2027-05-04 → 2027-05-11 (+7d) |  |
| 3 | **Road 01** |  | 2027-05-04 → 2027-05-11 (+7d) |  |
| RD | **Pre-Bituminous Construction** |  | 2027-03-29 → 2027-04-05 (+7d) |  |
| CO-RD-PB-280 | Subgrade Layer for Road Works for External Road - 3 |  | 2027-03-20 → 2027-03-27 (+7d) |  |
| CO-RD-PB-290 | Aggregate Base Course Layer for Road Works for External Road - 3 | 2027-03-17 → 2026-10-19 A (-149d) | 2027-03-29 → 2027-04-05 (+7d) | 0% → 32% |
| 1 | **Bituminous Construction** | 2027-04-03 → 2027-04-10 (+7d) | 2027-04-28 → 2027-05-05 (+7d) |  |
| CO-RD-B-300 | Bituminous Base Courses Layers for Road Works for External Road - 3 | 2027-04-03 → 2027-04-10 (+7d) | 2027-04-15 → 2027-04-22 (+7d) |  |
| CON-RD-MR-290 | Preparation of Asphaltic Wearing Course Layer for Roads Network for External Road - 3 | 2027-04-17 → 2027-04-24 (+7d) | 2027-04-28 → 2027-05-05 (+7d) |  |
| LS | **Pavement Works** | 2027-04-24 → 2027-05-01 (+7d) | 2027-04-26 → 2027-05-03 (+7d) |  |
| CO-RD-PV-300 | Fixing of Curbstone for Sidewalks Pavement for External Road - 3 | 2027-04-24 → 2027-05-01 (+7d) | 2027-04-26 → 2027-05-03 (+7d) |  |
| CO-RD-PV-310 | Fixing of Interlock Tiles for Sidewalks Pavement for External Road - 3 | 2027-04-24 → 2027-05-01 (+7d) | 2027-04-26 → 2027-05-03 (+7d) |  |
| TS | **Traffic Signs Boards and Roads Marking** | 2027-04-29 → 2027-05-06 (+7d) | 2027-05-04 → 2027-05-11 (+7d) |  |
| CO-RD-F-RM-250 | Application of Road Marking Works For Road Works for External Road - 3 | 2027-04-29 → 2027-05-06 (+7d) | 2027-05-04 → 2027-05-11 (+7d) |  |
| CO-RD-F-TS-190 | Installation Works of Traffic Signs Boards For Road Works for External Road - 3 | 2027-04-29 → 2027-05-06 (+7d) | 2027-05-02 → 2027-05-09 (+7d) |  |
| GEN | **Superstructure Work** |  | 2027-06-16 → 2027-06-23 (+7d) |  |
| 4 | **Utility Buildings** |  | 2027-06-16 → 2027-06-23 (+7d) |  |

| ID | Task | Start | Finish | Complete |
| --- | --- | --- | --- | --- |
| 4 | **Water Pump Station** |  | 2027-06-16 → 2027-06-23 (+7d) |  |
| 1 | **Civil work** |  | 2026-12-08 → 2026-12-15 (+7d) |  |
| 1 | **SubStructure** |  | 2026-11-08 → 2026-11-15 (+7d) |  |
| CO-UB-PS-160 | Backfilling and compaction work for pump station | 2026-11-04 → 2026-11-11 (+7d) | 2026-11-08 → 2026-11-15 (+7d) |  |
| 2 | **Super structure** |  | 2026-12-08 → 2026-12-15 (+7d) |  |
| CO-UB-PS-200 | curing and deshuttering formwork for Wall columns | 2026-11-09 → 2026-11-16 (+7d) | 2026-11-16 → 2026-11-23 (+7d) |  |
| CO-UB-PS-210 | Waterproofing for Walls columns | 2026-11-17 → 2026-11-24 (+7d) | 2026-11-18 → 2026-11-25 (+7d) |  |
| CO-UB-PS-220 | Formwork for pump roof | 2026-11-19 → 2026-11-26 (+7d) | 2026-11-23 → 2026-11-30 (+7d) |  |
| CO-UB-PS-230 | Steel fixing for pump roof | 2026-11-24 → 2026-12-01 (+7d) | 2026-11-28 → 2026-12-05 (+7d) |  |
| CO-UB-PS-240 | pouring for pump roof | 2026-11-29 → 2026-12-06 (+7d) | 2026-11-30 → 2026-12-07 (+7d) |  |
| CO-UB-PS-250 | curing and deshuttering formwork for pump roof | 2026-12-01 → 2026-12-08 (+7d) | 2026-12-08 → 2026-12-15 (+7d) |  |
| 2 | **Architectural work** | 2026-12-09 → 2026-12-16 (+7d) | 2027-01-12 → 2027-01-19 (+7d) |  |
| CO-UB-PS-260 | Executing Masonry Works for Water Pump station building | 2026-12-09 → 2026-12-16 (+7d) | 2026-12-16 → 2026-12-23 (+7d) |  |
| CO-UB-PS-270 | Executing Plastering Works for Pump station building | 2026-12-17 → 2026-12-24 (+7d) | 2026-12-24 → 2026-12-31 (+7d) |  |
| CO-UB-PS-280 | Executing Painting and Finishes Works for Pump station building | 2026-12-26 → 2027-01-02 (+7d) | 2027-01-03 → 2027-01-10 (+7d) |  |
| CO-UB-PS-320 | Doors and windows Fixing &Stair Tiles | 2027-01-04 → 2027-01-11 (+7d) | 2027-01-12 → 2027-01-19 (+7d) |  |
| 4 | **Mechanical work** | 2027-05-01 → 2027-05-08 (+7d) | 2027-06-16 → 2027-06-23 (+7d) |  |
| CO-UB-PS-340 | Executing HVAC System for Water Pump station building | 2027-05-01 → 2027-05-08 (+7d) | 2027-05-11 → 2027-05-24 (+13d) |  |
| CO-UB-PS-360 | Executing Fire fighting institution works(piping and wire installation) for Water Pump station building | 2027-05-12 → 2027-05-25 (+13d) | 2027-05-29 → 2027-06-05 (+7d) |  |
| CO-UB-PS-380 | Executing Plummbing works for Water Pump station building | 2027-05-30 → 2027-06-06 (+7d) | 2027-06-09 → 2027-06-16 (+7d) |  |
| CO-UB-PS-390 | Installation of pumps | 2027-06-10 → 2027-06-17 (+7d) | 2027-06-16 → 2027-06-23 (+7d) |  |
| 3 | **Sewage Lift Station** |  | 2027-01-21 → 2027-01-28 (+7d) |  |
| 1 | **Civil work** |  | 2027-01-18 → 2027-01-25 (+7d) |  |
| 2 | **Super structure** |  | 2027-01-18 → 2027-01-25 (+7d) |  |
| CO-UB-LS-360 | pouring for pump roof |  | 2027-01-04 → 2027-01-11 (+7d) |  |
| CO-UB-LS-370 | curing and deshuttering formwork for pump roof | 2027-01-05 → 2027-01-12 (+7d) | 2027-01-18 → 2027-01-25 (+7d) |  |
| 2 | **Architectural work** | 2027-01-19 → 2027-01-26 (+7d) | 2027-01-21 → 2027-01-28 (+7d) |  |
| CO-UB-LS-390 | Executing Plastering and Finishes Works for Sewage Lift Station | 2027-01-19 → 2027-01-26 (+7d) | 2027-01-21 → 2027-01-28 (+7d) |  |
| 5 | **Potable Water Tank** | 2026-12-26 → 2027-01-02 (+7d) | 2027-03-28 → 2027-04-04 (+7d) |  |
| 1 | **Eearth Work** | 2026-12-26 → 2027-01-02 (+7d) | 2027-01-19 → 2027-01-26 (+7d) |  |
| CO-UB-PWT-100 | Excavation work for tank foundation tank formation level for Potable Water Tank | 2026-12-26 → 2027-01-02 (+7d) | 2027-01-07 → 2027-01-14 (+7d) |  |
| CO-UB-PWT-110 | Soil replacement Up to tank formation level for Potable Water Tank | 2027-01-09 → 2027-01-16 (+7d) | 2027-01-19 → 2027-01-26 (+7d) |  |
| 2 | **Structural Work** | 2027-01-20 → 2027-01-27 (+7d) | 2027-03-08 → 2027-03-18 (+10d) |  |
| CO-UB-PWT-120 | Plain Concrete works for Potable Water Tank | 2027-01-20 → 2027-01-27 (+7d) | 2027-01-27 → 2027-02-03 (+7d) |  |
| CO-UB-PWT-130 | Form work for Tank Foundation for Potable Water Tank | 2027-01-28 → 2027-02-04 (+7d) | 2027-02-10 → 2027-02-17 (+7d) |  |
| CO-UB-PWT-140 | Steel Reinforcement work for Tank Foundation for Potable Water Tank | 2027-02-11 → 2027-02-18 (+7d) | 2027-02-24 → 2027-03-03 (+7d) |  |
| CO-UB-PWT-150 | Casting concrete for Tank Foundation for Potable Water Tank | 2027-02-25 → 2027-03-04 (+7d) | 2027-03-08 → 2027-03-18 (+10d) |  |
| 3 | **Tank Shell Erection&Roof Installation** | 2027-03-13 → 2027-03-20 (+7d) | 2027-03-28 → 2027-04-04 (+7d) |  |
| CO-UB-PWT-170 | shell erection for Potable Water Tank | 2027-03-13 → 2027-03-20 (+7d) | 2027-03-28 → 2027-04-04 (+7d) |  |
| 2 | **IrrigationTank** | 2027-01-09 → 2027-01-16 (+7d) | 2027-03-27 → 2027-04-03 (+7d) |  |
| 1 | **Eearth Work** | 2027-01-09 → 2027-01-16 (+7d) | 2027-02-02 → 2027-02-09 (+7d) |  |
| CO-UB-IRT-140 | Excavation work for tank foundation tank formation level for Irrigation Tank | 2027-01-09 → 2027-01-16 (+7d) | 2027-01-21 → 2027-01-28 (+7d) |  |
| CO-UB-IRT-150 | Soil replacement Up to tank formation level for Irrigation Tank | 2027-01-23 → 2027-01-30 (+7d) | 2027-02-02 → 2027-02-09 (+7d) |  |
| 2 | **Structural Work** | 2027-02-03 → 2027-02-10 (+7d) | 2027-03-07 → 2027-03-17 (+10d) |  |
| CO-UB-IRT-160 | Plain Concrete works for Irrigation Tank | 2027-02-03 → 2027-02-10 (+7d) | 2027-02-06 → 2027-02-13 (+7d) |  |
| CO-UB-IRT-170 | Form work for Tank Foundation for Irrigation Tank | 2027-02-07 → 2027-02-14 (+7d) | 2027-02-17 → 2027-02-24 (+7d) |  |
| CO-UB-IRT-180 | Steel Reinforcement work for Tank Foundation for Irrigation Tank | 2027-02-18 → 2027-02-25 (+7d) | 2027-03-02 → 2027-03-13 (+11d) |  |
| CO-UB-IRT-190 | Casting concrete for Tank Foundation for Irrigation Tank | 2027-03-03 → 2027-03-14 (+11d) | 2027-03-07 → 2027-03-17 (+10d) |  |
| 3 | **Tank Shell Erection&Roof Installation** | 2027-03-08 → 2027-03-18 (+10d) | 2027-03-27 → 2027-04-03 (+7d) |  |
| CO-UB-IRT-210 | shell erection for Irrigation Tank | 2027-03-08 → 2027-03-18 (+10d) | 2027-03-27 → 2027-04-03 (+7d) |  |
| 1 | **Control Room** |  | 2027-05-08 → 2027-05-13 (+5d) |  |
| 5 | **Civil Work** |  | 2027-01-13 → 2027-01-06 (-7d) |  |
| CO-UB-CR-130 | Pouring R.C Columns For Control Room | 2026-12-20 → 2026-10-19 A (-62d) | 2027-01-02 → 2026-10-24 A (-70d) | 0% → 100% |
| CO-UB-CR-140 | Pouring Beams and Slab For Control Room | 2027-01-03 → 2026-10-25 A (-70d) | 2027-01-13 → 2027-01-06 (-7d) | 0% → 5% |
| 6 | **Finishing Work** | 2027-01-14 → 2027-01-20 (+6d) | 2027-05-08 → 2027-05-13 (+5d) |  |
| 1 | **Architictural work** | 2027-01-14 → 2027-01-20 (+6d) | 2027-03-03 → 2027-03-13 (+10d) |  |
| CO-UB-CR-150 | Brick Work For Control Room | 2027-01-14 → 2027-01-20 (+6d) | 2027-01-25 → 2027-01-31 (+6d) |  |
| CO-UB-CR-160 | Thermal & Moisture Protection Work for Control Room | 2027-01-26 → 2027-02-01 (+6d) | 2027-02-02 → 2027-02-08 (+6d) |  |
| CO-UB-CR-200 | Install For Curtian Wall and Windows and Doors | 2027-02-03 → 2027-02-09 (+6d) | 2027-02-10 → 2027-02-16 (+6d) |  |
| CO-UB-CR-240 | External Finshing Work (Walls and Floor) | 2027-02-11 → 2027-02-17 (+6d) | 2027-02-20 → 2027-02-25 (+5d) |  |
| CO-UB-CR-250 | Internal Finshing Work (Walls,Floor and Ceiling) | 2027-02-21 → 2027-02-27 (+6d) | 2027-03-03 → 2027-03-13 (+10d) |  |
| 3 | **Mechanical Work** | 2027-01-26 → 2027-02-01 (+6d) | 2027-04-22 → 2027-04-28 (+6d) |  |
| 3 | **HVAC System** | 2027-01-26 → 2027-02-01 (+6d) | 2027-04-22 → 2027-04-28 (+6d) |  |
| CO-UB-CR-170 | Install of Refrigerant Piping ( fabricated metal ducts with flanges complete with supports, vanes, dampers ) | 2027-01-26 → 2027-02-01 (+6d) | 2027-02-18 → 2027-02-24 (+6d) |  |
| CO-UB-CR-260 | Install of Mini split actual and Ducted split | 2027-03-04 → 2027-03-14 (+10d) | 2027-03-30 → 2027-04-05 (+6d) |  |
| CO-UB-CR-310 | Install of Air Grills 150mm x150mm and Air Diffuser 600mm x 600mm | 2027-03-31 → 2027-04-06 (+6d) | 2027-04-22 → 2027-04-28 (+6d) |  |
| 4 | **Fire Fitting System** | 2027-02-20 → 2027-02-25 (+5d) | 2027-03-14 → 2027-03-20 (+6d) |  |
| CO-UB-CR-180 | Installation & Testing of 2 hours Fire rated system for closing the openings between rooms with help of Rock wool | 2027-02-20 → 2027-02-25 (+5d) | 2027-03-02 → 2027-03-08 (+6d) |  |
| CO-UB-CR-270 | Install Fire Extinguishers | 2027-03-04 → 2027-03-14 (+10d) | 2027-03-14 → 2027-03-20 (+6d) |  |
| 1 | **Plumbing System** | 2027-03-04 → 2027-03-14 (+10d) | 2027-03-21 → 2027-03-27 (+6d) |  |

| ID | Task | Start | Finish |
| --- | --- | --- | --- |
| CO-UB-CR-370 | Install of Sanitary Wares Including Relevant Pipes and Fittings | 2027-03-04 → 2027-03-14 (+10d) | 2027-03-21 → 2027-03-27 (+6d) |
| 4 | **Electrical Work** | 2027-03-04 → 2027-03-14 (+10d) | 2027-05-01 → 2027-05-06 (+5d) |
| 1 | **LV Power** | 2027-03-04 → 2027-03-14 (+10d) | 2027-04-26 → 2027-05-02 (+6d) |
| CO-UB-CR-190 | Install of Distribution board For Control Room | 2027-03-04 → 2027-03-14 (+10d) | 2027-03-18 → 2027-03-24 (+6d) |
| CO-UB-CR-220 | Install of Earting Cable for Control Room | 2027-03-20 → 2027-03-25 (+5d) | 2027-04-04 → 2027-04-10 (+6d) |
| CO-UB-CR-280 | Install of Socket outlet and LED Lighting | 2027-04-05 → 2027-04-11 (+6d) | 2027-04-26 → 2027-05-02 (+6d) |
| 3 | **Fire Detection And Alarm System** | 2027-03-22 → 2027-03-28 (+6d) | 2027-05-01 → 2027-05-06 (+5d) |
| CO-UB-CR-210 | Install of 2C x 1.5 Sqm FR Rated Armored - Cable For Loop Wiring | 2027-03-22 → 2027-03-28 (+6d) | 2027-03-25 → 2027-03-31 (+6d) |
| CO-UB-CR-230 | Install of Transmission Communication cable - Fiber Optics 12Core | 2027-03-27 → 2027-04-01 (+5d) | 2027-03-30 → 2027-04-05 (+6d) |
| CO-UB-CR-290 | Install of power supply system for fire alarm control panel | 2027-03-31 → 2027-04-06 (+6d) | 2027-04-04 → 2027-04-10 (+6d) |
| CO-UB-CR-300 | Install of Fire Alarm Control panel | 2027-04-05 → 2027-04-11 (+6d) | 2027-04-11 → 2027-04-17 (+6d) |
| CO-UB-CR-320 | Installation of the addressable manual call point with operation safety glass breaking | 2027-04-12 → 2027-04-18 (+6d) | 2027-04-14 → 2027-04-20 (+6d) |
| CO-UB-CR-330 | Install of the photoelectric heat & smoke detector | 2027-04-15 → 2027-04-21 (+6d) | 2027-04-20 → 2027-04-26 (+6d) |
| CO-UB-CR-340 | Install of Sounder With Beacon | 2027-04-21 → 2027-04-27 (+6d) | 2027-04-26 → 2027-05-02 (+6d) |
| CO-UB-CR-350 | Install of Addressable Control module | 2027-04-27 → 2027-05-03 (+6d) | 2027-05-01 → 2027-05-06 (+5d) |
| 2 | **Furnitures work** | 2027-05-02 → 2027-05-08 (+6d) | 2027-05-08 → 2027-05-13 (+5d) |
| CO-UB-CR-360 | Office Chairs,Tables and Stand | 2027-05-02 → 2027-05-08 (+6d) | 2027-05-08 → 2027-05-13 (+5d) |
| ML | **Softscape and Planting Works** | 2027-04-24 → 2027-05-01 (+7d) | 2027-06-08 → 2027-06-15 (+7d) |
| CO-LS-PL-160 | Planting Works: Planting including plants, forming planting beds, suitable soil, supports, and protection | 2027-04-24 → 2027-05-01 (+7d) | 2027-05-10 → 2027-05-23 (+13d) |
| CO-LS-SF-170 | Site Furnishings (Seating Bench,Stone Boulders and Gravel) | 2027-05-11 → 2027-05-24 (+13d) | 2027-06-08 → 2027-06-15 (+7d) |
| 6 | **Storm Drainage Ponds** |  | 2027-04-28 → 2027-05-05 (+7d) |
| CO-SD-PO-100-P1 | Excavation & Filling Works - PART 1 for Storm Drainage Ponds |  | 2027-03-07 → 2027-03-17 (+10d) |
| CO-SD-PO-110-P1 | Finished Grouted Riprap - PART 1 for Storm Drainage Ponds |  | 2027-03-20 → 2027-03-27 (+7d) |
| CO-SD-PO-100-P2 | Excavation & Filling Works - PART 2 for Storm Drainage Ponds | 2027-03-21 → 2027-03-28 (+7d) | 2027-04-08 → 2027-04-15 (+7d) |
| CO-SD-PO-110-P2 | Finished Grouted Riprap - PART 2 for Storm Drainage Ponds | 2027-04-10 → 2027-04-17 (+7d) | 2027-04-28 → 2027-05-05 (+7d) |
| 1 | **Boundary Fence and Gaurd Room** |  | 2027-06-06 → 2027-06-13 (+7d) |
| 1 | **Gaurd Room Work** | 2027-04-11 → 2027-04-18 (+7d) | 2027-06-06 → 2027-06-13 (+7d) |
| 1 | **Civil Work** | 2027-04-11 → 2027-04-18 (+7d) | 2027-04-27 → 2027-05-04 (+7d) |
| A1000 | Excavation Work For Guard Room Foundation | 2027-04-11 → 2027-04-18 (+7d) | 2027-04-15 → 2027-04-22 (+7d) |
| A1010 | Pouring for Plain Concrete for Guard Room | 2027-04-17 → 2027-04-24 (+7d) | 2027-04-17 → 2027-04-24 (+7d) |
| A1020 | Pouring R.C Footing for Guard Room | 2027-04-18 → 2027-04-25 (+7d) | 2027-04-20 → 2027-04-27 (+7d) |
| A1030 | Pouring R.C Columns for Guard Room | 2027-04-21 → 2027-04-28 (+7d) | 2027-04-24 → 2027-05-01 (+7d) |
| A1040 | Pouring Beams and Slab for Guard Room | 2027-04-25 → 2027-05-02 (+7d) | 2027-04-27 → 2027-05-04 (+7d) |
| 2 | **Finishing Work** | 2027-04-28 → 2027-05-05 (+7d) | 2027-06-06 → 2027-06-13 (+7d) |
| 1 | **Architectural work** | 2027-04-28 → 2027-05-05 (+7d) | 2027-06-03 → 2027-06-10 (+7d) |
| A1050 | Brick Works for Architectural Works for Guard Rooms | 2027-04-28 → 2027-05-05 (+7d) | 2027-05-04 → 2027-05-11 (+7d) |
| A1060 | Thermal & Moisture Protection Work for Architectural Works for Guard Rooms | 2027-05-05 → 2027-05-12 (+7d) | 2027-05-10 → 2027-05-23 (+13d) |
| A1080 | External Finshing Work (Walls and Floor) for Architectural Works for Guard Rooms | 2027-05-23 → 2027-05-30 (+7d) | 2027-05-24 → 2027-05-31 (+7d) |
| A1090 | Internal Finshing Work (Walls,Floor and Ceiling) for Architectural Works for Guard Rooms | 2027-05-23 → 2027-05-30 (+7d) | 2027-05-29 → 2027-06-05 (+7d) |
| A1070 | Installation of Windows and Doors for Architectural Works for Guard Rooms | 2027-05-30 → 2027-06-06 (+7d) | 2027-06-03 → 2027-06-10 (+7d) |
| 3 | **Mechanical Work** | 2027-05-11 → 2027-05-24 (+13d) | 2027-05-25 → 2027-06-01 (+7d) |
| 1 | **Drainage System** | 2027-05-11 → 2027-05-24 (+13d) | 2027-05-25 → 2027-06-01 (+7d) |
| A1110 | Installation of Sewage Piping System complete with joints, angles, reducer etc. for Drainage System for Guard Rooms | 2027-05-11 → 2027-05-24 (+13d) | 2027-05-20 → 2027-05-27 (+7d) |
| A1120 | Installation of all Sanitary Ware for Drainage System for Guard Rooms | 2027-05-22 → 2027-05-29 (+7d) | 2027-05-25 → 2027-06-01 (+7d) |
| 2 | **Water Supply System** | 2027-05-11 → 2027-05-24 (+13d) | 2027-05-25 → 2027-06-01 (+7d) |
| A1140 | Installation of Water Piping System complete with joints, angles, reducer etc. for Water Supply System for Guard Rooms | 2027-05-11 → 2027-05-24 (+13d) | 2027-05-13 → 2027-05-26 (+13d) |
| A1180 | Installation oF Water Supply Wares (Water Heater, Faucets, Etc..) for Water Supply System for Guard Rooms | 2027-05-20 → 2027-05-27 (+7d) | 2027-05-22 → 2027-05-29 (+7d) |
| A1240 | Installation of water tanks for Water Supply System for Guard Rooms | 2027-05-25 → 2027-06-01 (+7d) | 2027-05-25 → 2027-06-01 (+7d) |
| 3 | **HVAC System** | 2027-05-11 → 2027-05-24 (+13d) | 2027-05-13 → 2027-05-26 (+13d) |
| A1200 | Installation of AC Piping for HVAC System for Guard Rooms | 2027-05-11 → 2027-05-24 (+13d) | 2027-05-12 → 2027-05-25 (+13d) |
| A1190 | Installation of AC Units for HVAC System for Guard Rooms | 2027-05-13 → 2027-05-26 (+13d) | 2027-05-13 → 2027-05-26 (+13d) |
| 4 | **Fire Fighting System** | 2027-05-11 → 2027-05-24 (+13d) | 2027-05-13 → 2027-05-26 (+13d) |
| A1220 | Installation & Testing of 2 hours Fire Fighting system for Fire Fighting System for Guard Rooms | 2027-05-11 → 2027-05-24 (+13d) | 2027-05-12 → 2027-05-25 (+13d) |
| A1230 | Installation of Fire Extinguishers for Fire Fighting System for Guard Rooms | 2027-05-13 → 2027-05-26 (+13d) | 2027-05-13 → 2027-05-26 (+13d) |
| 4 | **Electrical Work** | 2027-05-11 → 2027-05-24 (+13d) | 2027-05-29 → 2027-06-05 (+7d) |
| 1 | **LV Power** | 2027-05-11 → 2027-05-24 (+13d) | 2027-05-26 → 2027-06-02 (+7d) |
| A1250 | Installation of Conduits and Cables for LV System for Gaurd Rooms | 2027-05-11 → 2027-05-24 (+13d) | 2027-05-22 → 2027-05-29 (+7d) |
| A1260 | Install of Eletrical Finishes (DBs, Sockets and Lightings) and Termination for LV System for Gaurd Rooms | 2027-05-23 → 2027-05-30 (+7d) | 2027-05-26 → 2027-06-02 (+7d) |
| 3 | **Fire Detection And Alarm System** | 2027-05-11 → 2027-05-24 (+13d) | 2027-05-29 → 2027-06-05 (+7d) |
| A1340 | Installation of Conduits and Cables for Fire Alarm System for Gaurd Rooms | 2027-05-11 → 2027-05-24 (+13d) | 2027-05-22 → 2027-05-29 (+7d) |
| A1350 | Installation of Fire Alarm Devices (AMCP, SD,HD, Sounder and Panels) for Fire Alarm System for Gaurd Rooms | 2027-05-23 → 2027-05-30 (+7d) | 2027-05-29 → 2027-06-05 (+7d) |
| 2 | **Furniture work** | 2027-06-05 → 2027-06-12 (+7d) | 2027-06-06 → 2027-06-13 (+7d) |
| A1100 | Office Chairs,Tables and Stand | 2027-06-05 → 2027-06-12 (+7d) | 2027-06-06 → 2027-06-13 (+7d) |
| 3 | **Boundary Fence** |  | 2027-05-26 → 2027-06-02 (+7d) |
| 2 | **Boundary Fence - South** |  | 2027-04-05 → 2027-04-12 (+7d) |
| 1 | **Civil Work** |  | 2027-01-02 → 2027-01-09 (+7d) |
| CO-SU-FE-N-CI-130 | Pouring R.C Columns For Boundary Fence South |  | 2026-12-20 → 2026-12-27 (+7d) |
| CO-SU-FE-N-CI-140 | Pouring Beams For Boundary Fence South | 2026-12-20 → 2026-12-27 (+7d) | 2027-01-02 → 2027-01-09 (+7d) |
| 5 | **Finishing Work** |  | 2027-04-05 → 2027-04-12 (+7d) |
| 4 | **Architictural work** |  | 2027-03-08 → 2027-03-18 (+10d) |

| ID | Task | Start | Finish | Other |
| --- | --- | --- | --- | --- |
| CO-SU-FE-N-AR-100 | Install Brick Work For Boundary Fence South |  | 2027-01-24 → 2027-01-31 (+7d) |  |
| CO-SU-FE-N-AR-110 | Insulation For Boundary Fence South | 2027-02-09 → 2027-02-16 (+7d) | 2027-02-25 → 2027-03-04 (+7d) |  |
| CO-SU-FE-N-AR-120 | Install all the Relevant Cladding and Finishes For Boundary Fence South | 2027-02-27 → 2027-03-06 (+7d) | 2027-03-08 → 2027-03-18 (+10d) |  |
| 3 | **Electrical Work** | 2027-01-25 → 2027-02-01 (+7d) | 2027-04-05 → 2027-04-12 (+7d) |  |
| CO-SU-FE-N-EL-240 | Installation of Conduits and Cables for Electricial Works For Boundary Fence South | 2027-01-25 → 2027-02-01 (+7d) | 2027-02-08 → 2027-02-15 (+7d) |  |
| CO-SU-FE-N-EL-250 | Install, fixings, testing of all electrical finishes and lightings for Electricial Works For Boundary Fence South | 2027-03-13 → 2027-03-20 (+7d) | 2027-04-05 → 2027-04-12 (+7d) |  |
| 1 | **Boundary Fence - West** |  | 2027-04-15 → 2027-04-22 (+7d) |  |
| 5 | **Finishing Work** |  | 2027-04-15 → 2027-04-22 (+7d) |  |
| 4 | **Architictural work** |  | 2027-03-29 → 2027-04-05 (+7d) |  |
| CO-SU-FE-N-AR-130 | Install Brick Work For Boundary Fence West |  | 2027-02-04 → 2027-02-11 (+7d) |  |
| CO-SU-FE-N-AR-140 | Insulation For Boundary Fence West |  | 2027-03-15 → 2027-03-22 (+7d) |  |
| CO-SU-FE-N-AR-150 | Install all the Relevant Cladding and Finishes For Boundary Fence West | 2027-03-16 → 2027-03-23 (+7d) | 2027-03-29 → 2027-04-05 (+7d) | resources Skilled Labor [96 h]; Unskilled Labor [96 h]; Supply and install 33mm thick Lexan cladding blue complete with necessary framings & accessories all as per manufacturer's & architectural drawing. [283.58]; Supply and install 50mm thick random cut stone cladding complete with 600mm x 50mm thick coping, necessary framings, slotted anchor connection, steel tube framing, aluminum angles all necessary fittings & accessories as per manufacturer's detail & archite [2981.34]; Supply and install External plastering to walls and columns min. 15mm thick with cement mortar of specified grade including galvanized mesh, corner beads, angle beads, CE bonds to rough and smooth plaster complete the work as per drawing & specification. [4477.61]; Supply and install 2 coats of weatherproof paint at walls including one prime coat and two coats and putty to give smooth Surface as a base for paint including fiberglass tape to joints and all other accessories as per manufacturers approved specification [4477.61]; Supply and install MODON Signage with Logo Type 1 [3.73]; Supply and install MODON Signage Type 2 [3.73]; Supply and install "Triangle Style" signage [11.19] → Skilled Labor [96 h]; Unskilled Labor [96 h]; Supply and install 33mm thick Lexan cladding blue complete with necessary framings & accessories all as per manufacturer's & architectural drawing. [283.58]; Supply and install 50mm thick random cut stone cladding complete with 600mm x 50mm thick coping, necessary framings, slotted anchor connection, steel tube framing, aluminum angles all necessary fittings & accessories as per manufacturer's detail & archite [3981.34]; Supply and install External plastering to walls and columns min. 15mm thick with cement mortar of specified grade including galvanized mesh, corner beads, angle beads, CE bonds to rough and smooth plaster complete the work as per drawing & specification. [4477.61]; Supply and install 2 coats of weatherproof paint at walls including one prime coat and two coats and putty to give smooth Surface as a base for paint including fiberglass tape to joints and all other accessories as per manufacturers approved specification [4477.61]; Supply and install MODON Signage with Logo Type 1 [3.73]; Supply and install MODON Signage Type 2 [3.73]; Supply and install "Triangle Style" signage [11.19] |
| 3 | **Electrical Work** | 2027-02-09 → 2027-02-16 (+7d) | 2027-04-15 → 2027-04-22 (+7d) |  |
| CO-SU-FE-N-EL-260 | Installation of Conduits and Cables for Electricial Works For Boundary Fence West | 2027-02-09 → 2027-02-16 (+7d) | 2027-02-17 → 2027-02-24 (+7d) |  |
| CO-SU-FE-N-EL-270 | Install, fixings, testing of all electrical finishes and lightings for Electricial Works For Boundary Fence West | 2027-04-06 → 2027-04-13 (+7d) | 2027-04-15 → 2027-04-22 (+7d) |  |
| 3 | **Boundary Fence - North** |  | 2027-04-12 → 2027-04-19 (+7d) |  |
| 1 | **Civil Work** |  | 2027-01-16 → 2027-01-23 (+7d) |  |
| CO-SU-FE-N-CI-240 | Pouring Beams For Boundary Fence North | 2027-01-03 → 2027-01-10 (+7d) | 2027-01-16 → 2027-01-23 (+7d) |  |
| 5 | **Finishing Work** |  | 2027-04-12 → 2027-04-19 (+7d) |  |
| 4 | **Architictural work** |  | 2027-04-05 → 2027-04-12 (+7d) |  |
| CO-SU-FE-N-AR-160 | Install Brick Work For Boundary Fence North |  | 2027-02-13 → 2027-02-20 (+7d) |  |
| CO-SU-FE-N-AR-180 | Install all the Relevant Cladding and Finishes For Boundary Fence North |  | 2027-04-05 → 2027-04-12 (+7d) |  |
| CO-SU-FE-N-AR-170 | Insulation For Boundary Fence North | 2027-03-16 → 2027-03-23 (+7d) | 2027-03-28 → 2027-04-04 (+7d) | resources Skilled Labor [264 h]; Unskilled Labor [264 h]; Two Layers of Bituminous Coating; 20x20 Approved Polysulfide Joint Sealant [115.67]; 2 perpendicular layers of cold bitumen coats [22.39]; 2 layer of 4mm HDPE membrane, 2 perpendicular layers cold bitumen coats [22.39]; 1 layer EPOXY Paint 300 micron [22.39]; Membrane fully bonded to prime deck and upstand [22.39]; Geotextile Filter membrane uv resistance [22.39]; 85mm thick thermal insulation [22.39]; 1.5mm thick epdm waterproofing membrane [22.39] → Skilled Labor [264 h]; Unskilled Labor [264 h]; Two Layers of Bituminous Coating [12532]; 20x20 Approved Polysulfide Joint Sealant [115.67]; 2 perpendicular layers of cold bitumen coats [22.39]; 2 layer of 4mm HDPE membrane, 2 perpendicular layers cold bitumen coats [22.39]; 1 layer EPOXY Paint 300 micron [22.39]; Membrane fully bonded to prime deck and upstand [22.39]; Geotextile Filter membrane uv resistance [22.39]; 85mm thick thermal insulation [22.39]; 1.5mm thick epdm waterproofing membrane [22.39] |
| 3 | **Electrical Work** | 2027-02-18 → 2027-02-25 (+7d) | 2027-04-12 → 2027-04-19 (+7d) |  |
| CO-SU-FE-N-EL-280 | Installation of Conduits and Cables for Electricial Works For Boundary Fence North | 2027-02-18 → 2027-02-25 (+7d) | 2027-02-25 → 2027-03-04 (+7d) |  |
| CO-SU-FE-N-EL-290 | Install, fixings, testing of all electrical finishes and lightings for Electricial Works For Boundary Fence North | 2027-04-06 → 2027-04-13 (+7d) | 2027-04-12 → 2027-04-19 (+7d) |  |
| 4 | **Boundary Fence - East** |  | 2027-05-26 → 2027-06-02 (+7d) |  |
| 1 | **Civil Work** |  | 2027-01-27 → 2027-02-03 (+7d) |  |
| CO-SU-FE-N-CI-280 | Pouring R.C Columns For Boundary Fence East |  | 2027-01-09 → 2027-01-16 (+7d) |  |
| CO-SU-FE-N-CI-290 | Pouring Beams For Boundary Fence East | 2027-01-17 → 2027-01-24 (+7d) | 2027-01-27 → 2027-02-03 (+7d) |  |
| 5 | **Finishing Work** |  | 2027-05-26 → 2027-06-02 (+7d) |  |
| 4 | **Architictural work** |  | 2027-05-20 → 2027-05-27 (+7d) |  |
| CO-SU-FE-N-AR-190 | Install Brick Work For Boundary Fence East |  | 2027-04-22 → 2027-04-29 (+7d) |  |
| CO-SU-FE-N-AR-210 | Install all the Relevant Cladding and Finishes For Boundary Fence East | 2027-05-05 → 2027-05-12 (+7d) | 2027-05-20 → 2027-05-27 (+7d) |  |
| 3 | **Electrical Work** | 2027-04-24 → 2027-05-01 (+7d) | 2027-05-26 → 2027-06-02 (+7d) |  |
| CO-SU-FE-N-EL-300 | Installation of Conduits and Cables for Electricial Works For Boundary Fence East | 2027-04-24 → 2027-05-01 (+7d) | 2027-05-04 → 2027-05-11 (+7d) |  |
| CO-SU-FE-N-EL-310 | Install, fixings, testing of all electrical finishes and lightings for Electricial Works For Boundary Fence East | 2027-05-22 → 2027-05-29 (+7d) | 2027-05-26 → 2027-06-02 (+7d) |  |
| TC | **Testing and Comissioning** | 2027-06-07 → 2027-06-14 (+7d) | 2027-07-05 → 2027-07-12 (+7d) |  |
| INF | **Infrastructure Networks** | 2027-06-12 → 2027-06-19 (+7d) | 2027-06-30 → 2027-07-07 (+7d) |  |
| LV | **Low Voltage Network** | 2027-06-17 → 2027-06-24 (+7d) | 2027-06-30 → 2027-07-07 (+7d) |  |
| TC-LV-100 | Testing and Commissioning of Low Voltage Network | 2027-06-17 → 2027-06-24 (+7d) | 2027-06-30 → 2027-07-07 (+7d) |  |
| PW1 | **Irrigation Network** | 2027-06-17 → 2027-06-24 (+7d) | 2027-06-30 → 2027-07-07 (+7d) |  |
| T/C-IR | Testing and Commissioning of Irrigation Network | 2027-06-17 → 2027-06-24 (+7d) | 2027-06-30 → 2027-07-07 (+7d) |  |
| PW11 | **TSE Network** | 2027-06-17 → 2027-06-24 (+7d) | 2027-06-30 → 2027-07-07 (+7d) |  |
| T/C-TSE-10 | Testing and Commissioning of TSE Network | 2027-06-17 → 2027-06-24 (+7d) | 2027-06-30 → 2027-07-07 (+7d) |  |
| PW | **Potable Water Network** | 2027-06-17 → 2027-06-24 (+7d) | 2027-06-30 → 2027-07-07 (+7d) |  |
| T/C-PW | Testing and Commissioning of Potable Water Network | 2027-06-17 → 2027-06-24 (+7d) | 2027-06-30 → 2027-07-07 (+7d) |  |
| SW | **Sewage Network** | 2027-06-17 → 2027-06-24 (+7d) | 2027-06-30 → 2027-07-07 (+7d) |  |
| T/C-SW | Testing and Commissioning of Sewage Network | 2027-06-17 → 2027-06-24 (+7d) | 2027-06-30 → 2027-07-07 (+7d) |  |
| SD | **Storm Drainage Network** | 2027-06-17 → 2027-06-24 (+7d) | 2027-06-30 → 2027-07-07 (+7d) |  |
| T/C-DPO | Testing and Commissioning of Storm Drainage Ponds | 2027-06-17 → 2027-06-24 (+7d) | 2027-06-30 → 2027-07-07 (+7d) |  |
| T/C-SD | Testing and Commissioning of Storm Drainage Ponds and Storm Drainage Network | 2027-06-17 → 2027-06-24 (+7d) | 2027-06-30 → 2027-07-07 (+7d) |  |
| SL | **Street Lighting Network** | 2027-06-12 → 2027-06-19 (+7d) | 2027-06-24 → 2027-07-01 (+7d) |  |
| T/C-SL | Testing and Commissioning of Street Lighting Network | 2027-06-12 → 2027-06-19 (+7d) | 2027-06-24 → 2027-07-01 (+7d) |  |
| TE | **Telecom and Light Current Network** | 2027-06-12 → 2027-06-19 (+7d) | 2027-06-24 → 2027-07-01 (+7d) |  |
| T/C-TE | Testing and Commissioning of Telecom and Light Current Networks | 2027-06-12 → 2027-06-19 (+7d) | 2027-06-24 → 2027-07-01 (+7d) |  |
| MV | **Medium Voltage Network** | 2027-06-12 → 2027-06-19 (+7d) | 2027-06-24 → 2027-07-01 (+7d) |  |
| T/C-MV | Testing and Commissioning of Medium Voltage Network | 2027-06-12 → 2027-06-19 (+7d) | 2027-06-24 → 2027-07-01 (+7d) |  |
| RD | **Road Works** | 2027-06-12 → 2027-06-19 (+7d) | 2027-06-24 → 2027-07-01 (+7d) |  |
| T/C-RD | Testing and Commissioning of Road Works | 2027-06-12 → 2027-06-19 (+7d) | 2027-06-24 → 2027-07-01 (+7d) |  |
| 1 | **Utility Buildings** | 2027-06-07 → 2027-06-14 (+7d) | 2027-07-05 → 2027-07-12 (+7d) |  |
| T/C-CTV | Testing and Commissioning of Guard Room and Boundary Fence | 2027-06-07 → 2027-06-14 (+7d) | 2027-06-24 → 2027-07-01 (+7d) |  |
| T/C-CTV20 | Testing and Commissioning of Softscape And Planting | 2027-06-09 → 2027-06-16 (+7d) | 2027-06-27 → 2027-07-04 (+7d) |  |
| T/C-CTV10 | Testing and Commissioning of Utility Buildings | 2027-06-17 → 2027-06-24 (+7d) | 2027-07-05 → 2027-07-12 (+7d) | resources 100 mm thickness lean concrete under the foundation; Foundation; Grade Beams; Slab on grade; Walls; Beams; Slabs; Lightweight Concrete Roof insulation as per Architect's specification; Hollow Concrete masonry unit, 100 mm thick wall for internal block; Hollow Concrete masonry unit, 150 mm thick wall for internal block; Insulated brickwork. with expanded polystyrene 200mm thick for External block; Hollow Concrete masonry unit, 300 mm thick wall for External block; 2 perpendicular layers of cold bitumen coats; 2 layer of 4mm HDPE membrane, 2 perpendicular layers cold bitumen coats; 1 layer EPOXY Paint 300 micron; Membrane fully bonded to prime deck and upstand; Geotextile Filter membrane uv resistance; 85mm thick thermal insulation; 1.5mm thick epdm waterproofing membrane; D1 - 1100 mm width x 2200 mm height; D2 - 1070 mm width x 2225 mm height; D3 - 1200 mm width x 3000 mm height; D4 - 1800 mm width x 3000 mm height; Roller Shuter - 3000mm width x 4000mm height; D1' 1900mm width x 2950mm height; D2' 1200mm width x 2150mm height; D3' 800mm width x 2050mm height; D4' 1700mm width x 2050mm height; 1500 mm width x 1200 mm high (W01); 1200 mm width x 1200 mm high (W02); 1000 mm width x 2400 mm high (L1); Supply and install External plastering to walls and columns min. 15mm thick with cement mortar of specified grade including galvanized mesh, corner beads, angle beads, CE bonds to rough and smooth plaster complete the work as per drawing & specification.; Supply and install 2 coats of weatherproof paint at walls including one prime coat and two coats and putty to give smooth Surface as a base for paint including fiberglass tape to joints and all other accessories as per manufacturers approved specification; Supply and install internal plastering to walls and columns min. 15mm thick with cement mortar of specified grade including galvanized mesh, corner beads, angle beads, CE bonds to rough and smooth plaster complete the work as per drawing & specification.; Supply and install 2 coats of epoxy paint at walls including one prime coat and two coats and putty to give smooth Surface as a base for paint including fiberglass tape to joints and all other accessories as per manufacturers approved specification; Supply and install 300*300mm glazed ceramic wall tiles on cement mortar and including rough and smooth plaster, galvanized mesh, corner beads, angle beads, CE bonds; Acid Proof Tiles; Supply and install 600*600mm porcelain tiles with approved quality on 30 mm mortar including sand fill material as approved by the Client; Supply and install 12.5mm thk, gypsum board suspended ceiling including suspension system, paints as required specification and material as approved by the Client including frames supports, access openings and all other accessories to complete as shown in; 4.5 KG CO2 Type Fire Extinguishers; 6 KG ABC Type Fire Extinguishers; 15 mm dia.; 25 mm dia.; 32 mm dia.; 40 mm dia.; 80 mm dia.; 200 mm dia.; 250 mm dia.; Supply and installation of western water closet, flush tank type, heavy duty, one piece SASO certified, approval of client, dimesion not less than 40 cm width, 68 cm length including all other accessories as per drawings and specification; Supply and installation of urinal, heavy duty, one piece SASO certified, approval of client, including all other accessories as per drawings and specification; Supply and installation of Bib tap with Perenial Hose (BPH) with stainless steel flexible hose and cast brass chromeplated hand including all other accessories to complete as per drawing and specification.; Supply, installation, testing and commissioning of Lavatory / wash basin with counter for toilets, built in soap dispenser, mixer, single lever arm including all accessories as per drawings and specification and to the approval of the client; Provide and install paper towel dispenser, surface mounted, satin finish stainless steel as per approved sample including accessories.; Provide and install mirror as per approved sample including frames, backing and all accessories to complete.; Provide and install towel ring, surface mounted, satin finish stainless steel as per approved sample including accessories.; Hose Bib; Valve Chamber; Retarding Chamber; Inspection Chamber; Neutralization pit 1000x1000mm; 25mm diameter; 32mm diameter; 40mm diameter; 50mm diameter; 75mm diameter; 80mm diameter; 100mm diameter; 110mm diameter; 15mm diameter; 20mm diameter; 150mm diameter; 200mm diameter; 250mm diameter; 13mm diameter; Gully Trap; Floor drain 75mm; Floor cleanout 110mm; Roof drain; 20 mm; 25 mm; 32 mm; 40 mm; 50 mm; 100 mm; 150 mm; 200 mm; 250 mm; Altitude control valve assembly, size 200 mm; GRP water tanks capacity of each 1000 liter complete with all fittings, all valves and concrete pad; Water Heater 30ltr; Supply, install, connection, testing and commssionigs horizontal bladder type pressure tank with capacity 1500 liter according to manufacturer's detail and specification - PS-PT-1; Supply, install, connection, testing and commssionigs horizontal bladder type pressure tank with capacity 300 liter according to manufacturer's detail and specification - PS-PT-2; Chemical DosingTank (CDT) 6000 liters capacity polytheylene tank With pump assembly.; Actual capacity 1.0 Ton; Actual capacity 1.5 Ton; Actual capacity 2.0 Ton; Air Flow 280 l/s @ 150 pa; Air Flow 3200 l/s @ 100 pa; Air Flow 110 l/s @ 50 pa; Air Flow 70 l/s @ 50 pa; Air Flow 35 l/s @ 35 pa; Air Flow 105 l/s @ 50 pa; Air Flow 180 l/s @ 0.01 pa; Supply and install flexible duct with insulation; size 8 inch dia.; Supply and install flexible duct with insulation; size 10 inch dia.; Package Unit 57.4 kW "thermal"; Variable Air Volume (VAV 01); Variable Air Volume (VAV 02); Variable Air Volume (VAV 03); Variable Air Volume (VAV 04); Variable Air Volume (VAV 05); Variable Air Volume (VAV 06); Galvanized sheet metal ducts; Supply Liner Slot diffuser 3 slots 1 inch; Return Liner Slot diffuser 3 slots 1 inch; Exhaust Grill 150mm x 150mm; Exhast Air fan 515 l/s @ 150 pa; Exhast Air fan 3200 l/s @ 100 pa; Sand trap louver 2400mm x 1000mm; Sound attenuator size 1050 x 650 x 1000 m; Fire suppression system FM200 57 kg fill capacity consists of 2 cylinders, duty + standby, complete with all required mechanical, electrical , and control items to install, test, and operate the system.; Fire suppression system NOVEC 1230 134.1 kg fill capacity consists of 2 cylinders, duty + standby, complete with all required mechanical, electrical , and control items to install, test, and operate the system.; Fire suppression system NOVEC 1230 29.2 kg fill capacity consists of 2 cylinders, duty + standby, complete with all required mechanical, electrical , and control items to install, test, and operate the system.; Fire suppression system NOVEC 1230 53.5 kg fill capacity consists of 2 cylinders, duty + standby, complete with all required mechanical, electrical , and control items to install, test, and operate the system.; Fire suppression system NOVEC 1230 82.3 kg fill capacity consists of 2 cylinders, duty + standby, complete with all required mechanical, electrical , and control items to install, test, and operate the system.; Fire suppression system NOVEC 1230 42.5 kg fill capacity consists of 2 cylinders, duty + standby, complete with all required mechanical, electrical , and control items to install, test, and operate the system.; Supply and install steel ladder with cage at pump room for as per drawings and specification.; Overhead Travelling Crane; lifting capacity 1.50 ton manual type all to manufacturer's detail and specifications. - PS-OC-1; Hot dipped Galvanized steel Trench Grating; Hot dipped Galvanized steel Channel Cover Plate; Steel Frame and Cover 1200 x 1200; Vent Cowl (Standard Size); Steel Handrail of 1.2m height; 30W LED linear Pendant lighting; 30W LED Emergency linear Pendant lighting; 47W LED linear Pendant lighting; 47W LED Emergency linear Pendant lighting; 13W recess mounted LED down light fitting; 13W recess emergency mounted LED down light fitting with 1.5 Hr Battery; 10.4W LED Exit light with 1.5 Hr Battery; Distribution board (MDB-PR-01); Distribution board (LPDB-PR-01); Distribution board (MDB-CB-01); Distribution board (LPDB-CR-01); 13A,1? 230V Twin socket outlet with switch; 13A,1? 230V Industrial socket outlet with switch; 13A, Twin Socket outlet, Weather Proof; 400A, 3P Disconnect switch; 30A, 2P AC Disconnect Switch; 30A, 3P AC Disconnect Switch; 60A, 3P AC Disconnect Switch; 20A Duplex Receptacle Floor Mounted; Single gang Lighting switch; Double gang Lighting switch; 2way Single gang Lighting switch; Cable Tray 300 mm X 100 mm; 4CX6 Cu. XLPE FRLSZH Cable; 4CX10 Cu. XLPE FRLSZH Cable; 4CX16 Cu. XLPE FRLSZH Cable; 4CX25 Cu. XLPE FRLSZH Cable; 4CX35 Cu. XLPE FRLSZH Cable; 4CX185 Cu. XLPE FRLSZH Cable; 120mm2 Tinned copper wire; Grounding rod 20mmX3m; Grounding rod with Pit 20mmX3m; Earthing Bar; Cu earth strip 25X4 mm; 1.5m Air terminal; 4mm2 Cu./FRLSZH Cable; 6mm2 Cu./FRLSZH Cable; 10mm2 Cu./FRLSZH Cable; 16mm2 Cu./FRLSZH Cable; 95mm2 Cu./FRLSZH Cable; 120mm2 Cu./FRLSZH Cable; 30KVA, 400V, 3PH, 60Hz UPS; CB-UPS-01 panel; Supply, install and connection of a SCADA server cum workstation complete with network rack, network switch, sensors, printer, armoured cables with cable tray & conduits, level transmitter, liquid flow meter, quality sensor (COD,BOD,pH), pressure transmit; Fire Alarm Control panel with fire alarm zoning with Mimic panel with fire alarm zoning; Supply, install to site and installation of the Aspirating Smoke Detector complete with accessories and pipes; Supply, install to site and installation of the addressable manual call point with operation safety glass breaking and pushbutton; Supply, install to site and installation of the photoelectric smoke detector with base; Supply, install to site and installation of the heat detector with base; Supply, install to site and installation of multi criteria sensors with base; Supply, install to site and installation of Hydrogen detector; Supply, install to site and installation of Duct detector; Sounder With Beacon; Remote LED Indicator; Single Channel Interface Module; Addressable Control module for Sounders; Addressable relay module for interface; Addressable monitor module for interface; Supply, install to site and installation Fire loop cable; Supply, install to site and installation of power cable; Fire Fighter’s Telephone Centre; Fireman’s Telephone Jack; Voice Command Center; DACT (Auto - Dailer) for 24x7 Civil Defence; Transmission Communication cable - Fiber Optics; Transmission Communication cable - Ethernet Cable; Supply, install to site and installation of power supply system for fire alarm control panel; Pump Set for Irrigation Supply (IRR01 / IRR02); Pump Set for Drainage System; Pump Set for SW Force Main (1W+1S); Pump Set for FF Supply (FP01.FP02); Pump Set for Domestic Supply (BP01 / BP02); acoustical tiles suspended ceiling 600x600mm concealed metal → 30A, 3P AC Disconnect Switch; 60A, 3P AC Disconnect Switch; 20A Duplex Receptacle Floor Mounted; Single gang Lighting switch; Double gang Lighting switch; 2way Single gang Lighting switch; Cable Tray 300 mm X 100 mm; 4CX6 Cu. XLPE FRLSZH Cable; 4CX10 Cu. XLPE FRLSZH Cable; 4CX16 Cu. XLPE FRLSZH Cable; 4CX25 Cu. XLPE FRLSZH Cable; 4CX35 Cu. XLPE FRLSZH Cable; 4CX185 Cu. XLPE FRLSZH Cable; 120mm2 Tinned copper wire; Grounding rod 20mmX3m; Grounding rod with Pit 20mmX3m; Earthing Bar; Cu earth strip 25X4 mm; 1.5m Air terminal; 4mm2 Cu./FRLSZH Cable; 6mm2 Cu./FRLSZH Cable; 10mm2 Cu./FRLSZH Cable; 16mm2 Cu./FRLSZH Cable; 95mm2 Cu./FRLSZH Cable; 120mm2 Cu./FRLSZH Cable; 30KVA, 400V, 3PH, 60Hz UPS; CB-UPS-01 panel; Supply, install and connection of a SCADA server cum workstation complete with network rack, network switch, sensors, printer, armoured cables with cable tray & conduits, level transmitter, liquid flow meter, quality sensor (COD,BOD,pH), pressure transmit; Fire Alarm Control panel with fire alarm zoning with Mimic panel with fire alarm zoning; Supply, install to site and installation of the Aspirating Smoke Detector complete with accessories and pipes; Supply, install to site and installation of the addressable manual call point with operation safety glass breaking and pushbutton; Supply, install to site and installation of the photoelectric smoke detector with base; Supply, install to site and installation of the heat detector with base; Supply, install to site and installation of multi criteria sensors with base; Supply, install to site and installation of Hydrogen detector; Supply, install to site and installation of Duct detector; Sounder With Beacon; Remote LED Indicator; Single Channel Interface Module; Addressable Control module for Sounders; Addressable relay module for interface; Addressable monitor module for interface; Supply, install to site and installation Fire loop cable; Supply, install to site and installation of power cable; Fire Fighter’s Telephone Centre; Fireman’s Telephone Jack; Voice Command Center; DACT (Auto - Dailer) for 24x7 Civil Defence; Transmission Communication cable - Fiber Optics; Transmission Communication cable - Ethernet Cable; Supply, install to site and installation of power supply system for fire alarm control panel; Pump Set for Irrigation Supply (IRR01 / IRR02); Pump Set for Drainage System; Pump Set for SW Force Main (1W+1S); Pump Set for FF Supply (FP01.FP02); Pump Set for Domestic Supply (BP01 / BP02); acoustical tiles suspended ceiling 600x600mm concealed metal; 100 mm thickness lean concrete under the foundation; Foundation; Grade Beams; Slab on grade; Walls; Beams; Slabs; Lightweight Concrete Roof insulation as per Architect's specification; Hollow Concrete masonry unit, 100 mm thick wall for internal block; Hollow Concrete masonry unit, 150 mm thick wall for internal block; Insulated brickwork. with expanded polystyrene 200mm thick for External block; Hollow Concrete masonry unit, 300 mm thick wall for External block; 2 perpendicular layers of cold bitumen coats; 2 layer of 4mm HDPE membrane, 2 perpendicular layers cold bitumen coats; 1 layer EPOXY Paint 300 micron; Membrane fully bonded to prime deck and upstand; Geotextile Filter membrane uv resistance; 85mm thick thermal insulation; 1.5mm thick epdm waterproofing membrane; D1 - 1100 mm width x 2200 mm height; D2 - 1070 mm width x 2225 mm height; D3 - 1200 mm width x 3000 mm height; D4 - 1800 mm width x 3000 mm height; Roller Shuter - 3000mm width x 4000mm height; D1' 1900mm width x 2950mm height; D2' 1200mm width x 2150mm height; D3' 800mm width x 2050mm height; D4' 1700mm width x 2050mm height; 1500 mm width x 1200 mm high (W01); 1200 mm width x 1200 mm high (W02); 1000 mm width x 2400 mm high (L1); Supply and install External plastering to walls and columns min. 15mm thick with cement mortar of specified grade including galvanized mesh, corner beads, angle beads, CE bonds to rough and smooth plaster complete the work as per drawing & specification.; Supply and install 2 coats of weatherproof paint at walls including one prime coat and two coats and putty to give smooth Surface as a base for paint including fiberglass tape to joints and all other accessories as per manufacturers approved specification; Supply and install internal plastering to walls and columns min. 15mm thick with cement mortar of specified grade including galvanized mesh, corner beads, angle beads, CE bonds to rough and smooth plaster complete the work as per drawing & specification.; Supply and install 2 coats of epoxy paint at walls including one prime coat and two coats and putty to give smooth Surface as a base for paint including fiberglass tape to joints and all other accessories as per manufacturers approved specification; Supply and install 300*300mm glazed ceramic wall tiles on cement mortar and including rough and smooth plaster, galvanized mesh, corner beads, angle beads, CE bonds; Acid Proof Tiles; Supply and install 600*600mm porcelain tiles with approved quality on 30 mm mortar including sand fill material as approved by the Client; Supply and install 12.5mm thk, gypsum board suspended ceiling including suspension system, paints as required specification and material as approved by the Client including frames supports, access openings and all other accessories to complete as shown in; 4.5 KG CO2 Type Fire Extinguishers; 6 KG ABC Type Fire Extinguishers; 15 mm dia.; 25 mm dia.; 32 mm dia.; 40 mm dia.; 80 mm dia.; 200 mm dia.; 250 mm dia.; Supply and installation of western water closet, flush tank type, heavy duty, one piece SASO certified, approval of client, dimesion not less than 40 cm width, 68 cm length including all other accessories as per drawings and specification; Supply and installation of urinal, heavy duty, one piece SASO certified, approval of client, including all other accessories as per drawings and specification; Supply and installation of Bib tap with Perenial Hose (BPH) with stainless steel flexible hose and cast brass chromeplated hand including all other accessories to complete as per drawing and specification.; Supply, installation, testing and commissioning of Lavatory / wash basin with counter for toilets, built in soap dispenser, mixer, single lever arm including all accessories as per drawings and specification and to the approval of the client; Provide and install paper towel dispenser, surface mounted, satin finish stainless steel as per approved sample including accessories.; Provide and install mirror as per approved sample including frames, backing and all accessories to complete.; Provide and install towel ring, surface mounted, satin finish stainless steel as per approved sample including accessories.; Hose Bib; Valve Chamber; Retarding Chamber; Inspection Chamber; Neutralization pit 1000x1000mm; 25mm diameter; 32mm diameter; 40mm diameter; 50mm diameter; 75mm diameter; 80mm diameter; 100mm diameter; 110mm diameter; 15mm diameter; 20mm diameter; 150mm diameter; 200mm diameter; 250mm diameter; 13mm diameter; Gully Trap; Floor drain 75mm; Floor cleanout 110mm; Roof drain; 20 mm; 25 mm; 32 mm; 40 mm; 50 mm; 100 mm; 150 mm; 200 mm; 250 mm; Altitude control valve assembly, size 200 mm; GRP water tanks capacity of each 1000 liter complete with all fittings, all valves and concrete pad; Water Heater 30ltr; Supply, install, connection, testing and commssionigs horizontal bladder type pressure tank with capacity 1500 liter according to manufacturer's detail and specification - PS-PT-1; Supply, install, connection, testing and commssionigs horizontal bladder type pressure tank with capacity 300 liter according to manufacturer's detail and specification - PS-PT-2; Chemical DosingTank (CDT) 6000 liters capacity polytheylene tank With pump assembly.; Actual capacity 1.0 Ton; Actual capacity 1.5 Ton; Actual capacity 2.0 Ton; Air Flow 280 l/s @ 150 pa; Air Flow 3200 l/s @ 100 pa; Air Flow 110 l/s @ 50 pa; Air Flow 70 l/s @ 50 pa; Air Flow 35 l/s @ 35 pa; Air Flow 105 l/s @ 50 pa; Air Flow 180 l/s @ 0.01 pa; Supply and install flexible duct with insulation; size 8 inch dia.; Supply and install flexible duct with insulation; size 10 inch dia.; Package Unit 57.4 kW "thermal"; Variable Air Volume (VAV 01); Variable Air Volume (VAV 02); Variable Air Volume (VAV 03); Variable Air Volume (VAV 04); Variable Air Volume (VAV 05); Variable Air Volume (VAV 06); Galvanized sheet metal ducts; Supply Liner Slot diffuser 3 slots 1 inch; Return Liner Slot diffuser 3 slots 1 inch; Exhaust Grill 150mm x 150mm; Exhast Air fan 515 l/s @ 150 pa; Exhast Air fan 3200 l/s @ 100 pa; Sand trap louver 2400mm x 1000mm; Sound attenuator size 1050 x 650 x 1000 m; Fire suppression system FM200 57 kg fill capacity consists of 2 cylinders, duty + standby, complete with all required mechanical, electrical , and control items to install, test, and operate the system.; Fire suppression system NOVEC 1230 134.1 kg fill capacity consists of 2 cylinders, duty + standby, complete with all required mechanical, electrical , and control items to install, test, and operate the system.; Fire suppression system NOVEC 1230 29.2 kg fill capacity consists of 2 cylinders, duty + standby, complete with all required mechanical, electrical , and control items to install, test, and operate the system.; Fire suppression system NOVEC 1230 53.5 kg fill capacity consists of 2 cylinders, duty + standby, complete with all required mechanical, electrical , and control items to install, test, and operate the system.; Fire suppression system NOVEC 1230 82.3 kg fill capacity consists of 2 cylinders, duty + standby, complete with all required mechanical, electrical , and control items to install, test, and operate the system.; Fire suppression system NOVEC 1230 42.5 kg fill capacity consists of 2 cylinders, duty + standby, complete with all required mechanical, electrical , and control items to install, test, and operate the system.; Supply and install steel ladder with cage at pump room for as per drawings and specification.; Overhead Travelling Crane; lifting capacity 1.50 ton manual type all to manufacturer's detail and specifications. - PS-OC-1; Hot dipped Galvanized steel Trench Grating; Hot dipped Galvanized steel Channel Cover Plate; Steel Frame and Cover 1200 x 1200; Vent Cowl (Standard Size); Steel Handrail of 1.2m height; 30W LED linear Pendant lighting; 30W LED Emergency linear Pendant lighting; 47W LED linear Pendant lighting; 47W LED Emergency linear Pendant lighting; 13W recess mounted LED down light fitting; 13W recess emergency mounted LED down light fitting with 1.5 Hr Battery; 10.4W LED Exit light with 1.5 Hr Battery; Distribution board (MDB-PR-01); Distribution board (LPDB-PR-01); Distribution board (MDB-CB-01); Distribution board (LPDB-CR-01); 13A,1? 230V Twin socket outlet with switch; 13A,1? 230V Industrial socket outlet with switch; 13A, Twin Socket outlet, Weather Proof; 400A, 3P Disconnect switch; 30A, 2P AC Disconnect Switch |
| 1 | **Handing over and close out** | 2027-06-12 → 2027-06-19 (+7d) | 2027-07-08 → 2027-07-15 (+7d) |  |
| 2 | **As-Built** | 2027-06-12 → 2027-06-19 (+7d) | 2027-07-08 → 2027-07-15 (+7d) |  |
| HO-140 | Submission As-Built Drawing For Roads Network | 2027-06-12 → 2027-06-19 (+7d) | 2027-06-22 → 2027-06-29 (+7d) |  |
| HO-150 | Submission As-Built Drawing For Street Lighting Network | 2027-06-12 → 2027-06-19 (+7d) | 2027-06-22 → 2027-06-29 (+7d) |  |
| HO-160 | Submission As-Built Drawing For Telecom and Light Current Networks | 2027-06-12 → 2027-06-19 (+7d) | 2027-06-22 → 2027-06-29 (+7d) |  |
| HO-100 | Submission As-Built Drawing For Sewage Network | 2027-06-17 → 2027-06-24 (+7d) | 2027-06-28 → 2027-07-05 (+7d) |  |

| ID | Task | Start | Finish |
| --- | --- | --- | --- |
| HO-130 | Submission As-Built Drawing For Pond | 2027-06-17 → 2027-06-24 (+7d) | 2027-06-28 → 2027-07-05 (+7d) |
| HO-180 | Submission As-Built Drawing For Irrigation Network | 2027-06-17 → 2027-06-24 (+7d) | 2027-06-28 → 2027-07-05 (+7d) |
| HO-200 | Submission As-Built Drawing For Storm Network | 2027-06-17 → 2027-06-24 (+7d) | 2027-06-28 → 2027-07-05 (+7d) |
| HO-210 | Submission As-Built Drawing For Utility Buildings | 2027-06-27 → 2027-07-04 (+7d) | 2027-07-05 → 2027-07-12 (+7d) |
| HO-170 | Submission As-Built Drawing For Medium Voltage Network | 2027-07-01 → 2027-07-08 (+7d) | 2027-07-08 → 2027-07-15 (+7d) |
| HO-190 | As-Built Drawing For Potable Water Network | 2027-07-01 → 2027-07-08 (+7d) | 2027-07-08 → 2027-07-15 (+7d) |
| 1 | **De-Mobilization Works** | 2027-06-14 → 2027-06-21 (+7d) | 2027-07-04 → 2027-07-11 (+7d) |
| HO-230 | Remove Temporary Car Shades | 2027-06-14 → 2027-06-21 (+7d) | 2027-06-24 → 2027-07-01 (+7d) |
| HO-220 | Removing Portable Caravan | 2027-06-17 → 2027-06-24 (+7d) | 2027-06-24 → 2027-07-01 (+7d) |
| HO-120 | Remove material stock & Storage area | 2027-06-26 → 2027-07-03 (+7d) | 2027-07-04 → 2027-07-11 (+7d) |
| 3 | **Handing Over** | 2027-06-16 → 2027-06-23 (+7d) | 2027-07-08 → 2027-07-15 (+7d) |
| HO-240 | Final Walkthrough and Inspection | 2027-06-16 → 2027-06-23 (+7d) | 2027-06-24 → 2027-07-01 (+7d) |
| HO-250 | Review B.O.Q Qty. to ensure compliance with the actual status | 2027-06-16 → 2027-06-23 (+7d) | 2027-06-24 → 2027-07-01 (+7d) |
| HO-260 | Review FIR Approval to ensure compliance with the actual status | 2027-06-16 → 2027-06-23 (+7d) | 2027-06-24 → 2027-07-01 (+7d) |
| HO-270 | Review the sample drawing to ensure compliance with the actual status | 2027-06-16 → 2027-06-23 (+7d) | 2027-06-24 → 2027-07-01 (+7d) |
| HO-280 | Punch List Completion | 2027-06-26 → 2027-07-03 (+7d) | 2027-07-04 → 2027-07-11 (+7d) |
| HO-110 | Final Testing Work | 2027-07-01 → 2027-07-08 (+7d) | 2027-07-08 → 2027-07-15 (+7d) |

## Version 5 (data date 2026-11-02, saved 2026-11-04, file DHRT-01-001-BL00.R01-3-11.xer)

Note of the change: Renumber project folders 01–23 in order (after removing projects 12 and 25)

Last finish 2027-07-15 → 2027-07-22 (+7d).

Changed:

| ID | Task | Start | Finish |
| --- | --- | --- | --- |
| MS | **Key Milestones** |  | 2027-07-15 → 2027-07-22 (+7d) |
| CM | **Contractual Milestones** |  | 2027-07-15 → 2027-07-22 (+7d) |
| MS-CF-ENG | Completion of Submitting and Approval of Shopdrawing and Materials | 2026-11-22 → 2026-11-29 (+7d) | 2026-11-22 → 2026-11-29 (+7d) |
| MS-CF-SW | Completion of Construction Works for Sewage Network | 2027-03-04 → 2027-03-15 (+11d) | 2027-03-04 → 2027-03-15 (+11d) |
| MS-CF-MV | Completion of Construction Works for Medium Voltage Network | 2027-04-17 → 2027-04-24 (+7d) | 2027-04-17 → 2027-04-24 (+7d) |
| MS-MO-20 | Completion of Storm Drainage Ponds | 2027-05-05 → 2027-05-12 (+7d) | 2027-05-05 → 2027-05-12 (+7d) |
| MS-CF-SD | Completion of Construction Works for Storm Drainage Network | 2027-05-11 → 2027-05-24 (+13d) | 2027-05-11 → 2027-05-24 (+13d) |
| MS-CF-SL | Completion of Construction Works for Street Lighting Network | 2027-05-11 → 2027-05-24 (+13d) | 2027-05-11 → 2027-05-24 (+13d) |
| MS-CF-IR | Completion of Construction Works for Irrigation Network | 2027-05-12 → 2027-05-25 (+13d) | 2027-05-12 → 2027-05-25 (+13d) |
| MS-CF-LO | Completion of Construction Works for Low Voltage Network | 2027-05-12 → 2027-05-25 (+13d) | 2027-05-12 → 2027-05-25 (+13d) |
| MS-CF-PW | Completion of Construction Works for Potable Water Network | 2027-05-12 → 2027-05-25 (+13d) | 2027-05-12 → 2027-05-25 (+13d) |
| MS-CF-RD | Completion of Construction Works for Road Works | 2027-05-12 → 2027-05-25 (+13d) | 2027-05-12 → 2027-05-25 (+13d) |
| MS-CF-TE | Completion of Construction Works for Telecom and Light Current Networks | 2027-05-12 → 2027-05-25 (+13d) | 2027-05-12 → 2027-05-25 (+13d) |
| MS-CF-TSE | Completion of Construction Works for Treated Sewage Effluent Network | 2027-06-05 → 2027-06-12 (+7d) | 2027-06-05 → 2027-06-12 (+7d) |
| MS-MO-60 | Completion of Irrigation and Potable Tank | 2027-06-20 → 2027-06-27 (+7d) | 2027-06-20 → 2027-06-27 (+7d) |
| MS-MO-10 | Completion of Sewage Pump Station | 2027-06-23 → 2027-06-30 (+7d) | 2027-06-23 → 2027-06-30 (+7d) |
| MS-MO-50 | Completion of Water Pump Station | 2027-06-23 → 2027-06-30 (+7d) | 2027-06-23 → 2027-06-30 (+7d) |
| MS-MO-40 | Completion of Control Room | 2027-07-12 → 2027-07-19 (+7d) | 2027-07-12 → 2027-07-19 (+7d) |
| MS-CF-PF | Project Completion Date | 2027-07-15 → 2027-07-22 (+7d) | 2027-07-15 → 2027-07-22 (+7d) |
| CM1 | **Control Milestones** |  | 2026-10-26 → 2026-11-02 (+7d) |
| 2 | **The Employer** |  | 2026-10-26 → 2026-11-02 (+7d) |
| MS-MM-120 | Receipt of Advance Payment for the Project From The Employer | 2026-10-26 → 2026-11-02 (+7d) | 2026-10-26 → 2026-11-02 (+7d) |
| ENG | **Engineering Works** |  | 2026-11-22 → 2026-11-29 (+7d) |
| SD11 | **Material Submittals and Approvals** |  | 2026-11-22 → 2026-11-29 (+7d) |
| 1 | **Long Lead Time Items** | 2026-10-26 → 2026-11-02 (+7d) | 2026-11-22 → 2026-11-29 (+7d) |
| 2 | **Superstructure Works** | 2026-10-26 → 2026-11-02 (+7d) | 2026-11-22 → 2026-11-29 (+7d) |
| SL | **Sewage Pump Stations** | 2026-10-26 → 2026-11-02 (+7d) | 2026-11-08 → 2026-11-15 (+7d) |
| 1 | **Submission of Material** | 2026-10-26 → 2026-11-02 (+7d) | 2026-11-01 → 2026-11-08 (+7d) |
| ENG-MT-SPS-MC-S-100 | Material Submittal for Electromechanical Works for Pump Station | 2026-10-26 → 2026-11-02 (+7d) | 2026-11-01 → 2026-11-08 (+7d) |
| 2 | **Approval of Material** | 2026-11-02 → 2026-11-09 (+7d) | 2026-11-08 → 2026-11-15 (+7d) |
| ENG-MT-SPS-MC-A-110 | Material Approval for Electromechanical Works for Pump Station | 2026-11-02 → 2026-11-09 (+7d) | 2026-11-08 → 2026-11-15 (+7d) |
| SL1 | **Storage Tank (TSE)** | 2026-10-26 → 2026-11-02 (+7d) | 2026-11-22 → 2026-11-29 (+7d) |
| 1 | **Submission of Material** | 2026-10-26 → 2026-11-02 (+7d) | 2026-11-08 → 2026-11-15 (+7d) |
| ENG-MT-TSE-MC-S-110 | Material Submittal for Electromechanical Works for Storage Tank (TSE) | 2026-10-26 → 2026-11-02 (+7d) | 2026-11-08 → 2026-11-15 (+7d) |
| 2 | **Approval of Material** | 2026-11-09 → 2026-11-16 (+7d) | 2026-11-22 → 2026-11-29 (+7d) |
| ENG-MT-TSE-MC-A-120 | Material Approval for Electromechanical Works for Storage Tank (TSE) | 2026-11-09 → 2026-11-16 (+7d) | 2026-11-22 → 2026-11-29 (+7d) |
| PROC | **Procurement Cycle** |  | 2027-06-20 → 2027-06-27 (+7d) |
| NLL | **Short Lead Time Items** |  | 2027-05-02 → 2027-05-09 (+7d) |
| INF | **Infrastructure Networks** |  | 2027-05-02 → 2027-05-09 (+7d) |
| SD | **Storm Drainage Network** |  | 2027-03-06 → 2027-03-16 (+10d) |
| PO | **Issuance of Purchase Orders** |  | 2026-11-30 → 2026-12-07 (+7d) |
| 1 | **Main Line Sections** |  | 2026-10-27 → 2026-11-03 (+7d) |
| PRO-SD-PO-100 | Issuance of Purchase Order for Manholes of Storm Drainage Network | 2026-10-26 → 2026-11-02 (+7d) | 2026-10-27 → 2026-11-03 (+7d) |
| 2 | **Catch Basin Sections** | 2026-10-28 → 2026-11-04 (+7d) | 2026-11-09 → 2026-11-16 (+7d) |
| PRO-SD-PO-130 | Issuance of Purchase Order for Catch Basins of Storm Drainage Network | 2026-10-28 → 2026-11-04 (+7d) | 2026-11-02 → 2026-11-09 (+7d) |
| PRO-SD-PO-150 | Issuance of Purchase Order for Catch Basin Pipes of Storm Drainage Network | 2026-11-03 → 2026-11-10 (+7d) | 2026-11-09 → 2026-11-16 (+7d) |
| 3 | **Testing and Finishes** | 2026-11-10 → 2026-11-17 (+7d) | 2026-11-23 → 2026-11-30 (+7d) |
| PRO-SD-PO-120 | Issuance of Purchase Order for Manhole Covers of Storm Drainage Network | 2026-11-10 → 2026-11-17 (+7d) | 2026-11-16 → 2026-11-23 (+7d) |
| PRO-SD-PO-140 | Issuance of Purchase Order for Catch Basin Covers of Storm Drainage Network | 2026-11-17 → 2026-11-24 (+7d) | 2026-11-23 → 2026-11-30 (+7d) |
| TE1 | **Storm Drainage Ponds** | 2026-11-24 → 2026-12-01 (+7d) | 2026-11-30 → 2026-12-07 (+7d) |
| PRO-DPO-CV-PO-10 | Issuance of Purchase Order for Materials of Storm Drainage Ponds | 2026-11-24 → 2026-12-01 (+7d) | 2026-11-30 → 2026-12-07 (+7d) |
| MF | **Manufacturing of Material** |  | 2027-02-13 → 2027-02-20 (+7d) |
| 1 | **Main Line Sections** |  | 2026-11-05 → 2026-11-12 (+7d) |
| PRO-SD-MF-100 | Manufacturing of Materials for Manholes of Storm Drainage Network | 2026-10-28 → 2026-11-04 (+7d) | 2026-11-05 → 2026-11-12 (+7d) |
| 2 | **Catch Basin Sections** | 2026-11-03 → 2026-11-10 (+7d) | 2026-12-08 → 2026-12-15 (+7d) |
| PRO-SD-MF-130 | Manufacturing of Materials for Catch Basins of Storm Drainage Network | 2026-11-03 → 2026-11-10 (+7d) | 2026-12-01 → 2026-12-08 (+7d) |
| PRO-SD-MF-150 | Manufacturing of Materials for Catch Basin Pipes of Storm Drainage Network | 2026-11-10 → 2026-11-17 (+7d) | 2026-12-08 → 2026-12-15 (+7d) |
| 3 | **Testing and Finishes** | 2026-12-09 → 2026-12-16 (+7d) | 2027-02-04 → 2027-02-11 (+7d) |
| PRO-SD-MF-120 | Manufacturing of Materials for Manhole Covers of Storm Drainage Network | 2026-12-09 → 2026-12-16 (+7d) | 2026-12-31 → 2027-01-07 (+7d) |
| PRO-SD-MF-140 | Manufacturing of Materials for Catch Basin Covers of Storm Drainage Network | 2027-01-02 → 2027-01-09 (+7d) | 2027-02-04 → 2027-02-11 (+7d) |
| TE | **Storm Drainage Ponds** | 2026-12-01 → 2026-12-08 (+7d) | 2027-02-13 → 2027-02-20 (+7d) |
| PRO-DPO-CV-MF-10 | Manufacturing of Materials of Storm Drainage Ponds | 2026-12-01 → 2026-12-08 (+7d) | 2027-02-13 → 2027-02-20 (+7d) |
| 1DL | **1st Material Delivery & Site Inspection** |  | 2027-02-17 → 2027-02-24 (+7d) |
| 1 | **Main Line Sections** |  | 2026-11-10 → 2026-11-17 (+7d) |
| PRO-SD-1DL-100 | 1ST Material Delivery for Manholes of Storm Drainage Network | 2026-11-07 → 2026-11-14 (+7d) | 2026-11-10 → 2026-11-17 (+7d) |
| 2 | **Catch Basin Sections** | 2026-12-02 → 2026-12-09 (+7d) | 2026-12-13 → 2026-12-20 (+7d) |
| PRO-SD-1DL-130 | 1ST Material Delivery for Catch Basins of Storm Drainage Network | 2026-12-02 → 2026-12-09 (+7d) | 2026-12-06 → 2026-12-13 (+7d) |
| PRO-SD-1DL-120 | 1ST Material Delivery for Catch Basin Pipes of Storm Drainage Network | 2026-12-09 → 2026-12-16 (+7d) | 2026-12-13 → 2026-12-20 (+7d) |
| 3 | **Testing and Finishes** | 2027-01-02 → 2027-01-09 (+7d) | 2027-02-09 → 2027-02-16 (+7d) |
| PRO-SD-1DL-140 | 1ST Material Delivery for Manholes Covers of Storm Drainage Network | 2027-01-02 → 2027-01-09 (+7d) | 2027-01-05 → 2027-01-12 (+7d) |

| ID | Task | Start | Finish |
| --- | --- | --- | --- |
| PRO-SD-1DL-150 | 1ST Material Delivery for Catch Basin Covers of Storm Drainage Network | 2027-02-06 → 2027-02-13 (+7d) | 2027-02-09 → 2027-02-16 (+7d) |
| TE2 | **Storm Drainage Ponds** | 2027-02-14 → 2027-02-21 (+7d) | 2027-02-17 → 2027-02-24 (+7d) |
| PRO-DPO-CV-1DL-10 | 1ST Material Delivery for Materials of Drainage Ponds | 2027-02-14 → 2027-02-21 (+7d) | 2027-02-17 → 2027-02-24 (+7d) |
| DL | **Material Delivery & Site Inspection** |  | 2027-03-06 → 2027-03-16 (+10d) |
| 1 | **Main Line Sections** |  | 2026-12-09 → 2026-12-16 (+7d) |
| PRO-R25-SD-DL-120 | Material Delivery & Site Inspection of Main Line Pipes of Storm Drainage Network |  | 2026-12-09 → 2026-12-16 (+7d) |
| PRO-R25-SD-DL-100 | Material Delivery & Site Inspection of Manholes of Storm Drainage Network | 2026-11-11 → 2026-11-18 (+7d) | 2026-11-22 → 2026-11-29 (+7d) |
| 2 | **Catch Basin Sections** | 2026-12-07 → 2026-12-14 (+7d) | 2026-12-23 → 2026-12-30 (+7d) |
| PRO-R25-SD-DL-130 | Material Delivery & Site Inspection of Catch Basins for Storm Drainage Network | 2026-12-07 → 2026-12-14 (+7d) | 2026-12-15 → 2026-12-22 (+7d) |
| PRO-R25-SD-DL-110 | Material Delivery & Site Inspection of Catch Basin Pipes for Storm Drainage Network | 2026-12-16 → 2026-12-23 (+7d) | 2026-12-23 → 2026-12-30 (+7d) |
| 3 | **Testing and Finishes** | 2027-01-06 → 2027-01-13 (+7d) | 2027-02-25 → 2027-03-04 (+7d) |
| PRO-R25-SD-DL-140 | Material Delivery & Site Inspection of Manholes Covers for Storm Drainage Network | 2027-01-06 → 2027-01-13 (+7d) | 2027-01-28 → 2027-02-04 (+7d) |
| PRO-R25-SD-DL-150 | Material Delivery & Site Inspection of Catch Basin Covers for Storm Drainage Network | 2027-02-10 → 2027-02-17 (+7d) | 2027-02-25 → 2027-03-04 (+7d) |
| TE3 | **Storm Drainage Ponds** | 2027-02-18 → 2027-02-25 (+7d) | 2027-03-06 → 2027-03-16 (+10d) |
| PRO-DPO-CV-DL-10 | Material Delivery & Site Inspection for Materials of Storm Drainage Ponds | 2027-02-18 → 2027-02-25 (+7d) | 2027-03-06 → 2027-03-16 (+10d) |
| SW | **Sewage Network** | 2026-10-26 → 2026-11-02 (+7d) | 2026-12-12 → 2026-12-19 (+7d) |
| PO | **Issuance of Purchase Orders** | 2026-10-26 → 2026-11-02 (+7d) | 2026-11-18 → 2026-11-25 (+7d) |
| 1 | **Main Line Sections** | 2026-10-26 → 2026-11-02 (+7d) | 2026-11-10 → 2026-11-17 (+7d) |
| PRO-SW-PO-100 | Issuance of Purchase Order for Main Line Pipes of Sewage Network | 2026-10-26 → 2026-11-02 (+7d) | 2026-11-02 → 2026-11-09 (+7d) |
| PRO-SW-PO-110 | Issuance of Purchase Order for Manhole of Sewage Network | 2026-11-03 → 2026-11-10 (+7d) | 2026-11-10 → 2026-11-17 (+7d) |
| 3 | **Testing and Finishes** | 2026-11-11 → 2026-11-18 (+7d) | 2026-11-18 → 2026-11-25 (+7d) |
| PRO-SW-PO-120 | Issuance of Purchase Order for Manhole Covers of Sewage Network | 2026-11-11 → 2026-11-18 (+7d) | 2026-11-18 → 2026-11-25 (+7d) |
| MF | **Manufacturing of Material** | 2026-11-03 → 2026-11-10 (+7d) | 2026-11-25 → 2026-12-02 (+7d) |
| 1 | **Main Line Sections** | 2026-11-03 → 2026-11-10 (+7d) | 2026-11-22 → 2026-11-29 (+7d) |
| PRO-SW-MF-100 | Manufacturing of Main Line Pipes for Sewage Network | 2026-11-03 → 2026-11-10 (+7d) | 2026-11-14 → 2026-11-21 (+7d) |
| PRO-SW-MF-110 | Manufacturing of Manholes for Sewage Network | 2026-11-11 → 2026-11-18 (+7d) | 2026-11-22 → 2026-11-29 (+7d) |
| 3 | **Testing and Finishes** | 2026-11-19 → 2026-11-26 (+7d) | 2026-11-25 → 2026-12-02 (+7d) |
| PRO-SW-MF-120 | Manufacturing of Manhole Covers for Sewage Network | 2026-11-19 → 2026-11-26 (+7d) | 2026-11-25 → 2026-12-02 (+7d) |
| 1DL | **1st Material Delivery & Site Inspection** | 2026-11-15 → 2026-11-22 (+7d) | 2026-12-02 → 2026-12-09 (+7d) |
| 1 | **Main Line Sections** | 2026-11-15 → 2026-11-22 (+7d) | 2026-11-30 → 2026-12-07 (+7d) |
| PRO-SW-1DL-100 | 1ST Material Delivery for Main Line Pipes of Sewage Network | 2026-11-15 → 2026-11-22 (+7d) | 2026-11-18 → 2026-11-25 (+7d) |
| PRO-SW-1DL-110 | 1ST Material Delivery for Manholes of Sewage Network | 2026-11-26 → 2026-12-03 (+7d) | 2026-11-30 → 2026-12-07 (+7d) |
| 3 | **Testing and Finishes** | 2026-12-01 → 2026-12-08 (+7d) | 2026-12-02 → 2026-12-09 (+7d) |
| PRO-SW-1DL-120 | 1ST Material Delivery for Manholes Covers of Sewage Network | 2026-12-01 → 2026-12-08 (+7d) | 2026-12-02 → 2026-12-09 (+7d) |
| DL | **Material Delivery & Site Inspection** | 2026-12-01 → 2026-12-08 (+7d) | 2026-12-12 → 2026-12-19 (+7d) |
| 1 | **Main Line Sections** | 2026-12-01 → 2026-12-08 (+7d) | 2026-12-12 → 2026-12-19 (+7d) |
| PRO-R25-SW-DL-110 | Material Delivery & Site Inspection of Manholes for Sewage Network | 2026-12-01 → 2026-12-08 (+7d) | 2026-12-05 → 2026-12-12 (+7d) |
| PRO-R25-SW-DL-100 | Material Delivery & Site Inspection of Main Line Pipes for Sewage Network | 2026-12-08 → 2026-12-15 (+7d) | 2026-12-12 → 2026-12-19 (+7d) |
| 3 | **Testing and Finishes** | 2026-12-03 → 2026-12-10 (+7d) | 2026-12-07 → 2026-12-14 (+7d) |
| PRO-R25-SW-DL-120 | Material Delivery & Site Inspection of Manholes Covers for Sewage Network | 2026-12-03 → 2026-12-10 (+7d) | 2026-12-07 → 2026-12-14 (+7d) |
| TSE | **Treated Sewage Effluent (Tse)** | 2026-10-26 → 2026-11-02 (+7d) | 2026-12-24 → 2026-12-31 (+7d) |
| PO | **Issuance of Purchase Orders** | 2026-10-26 → 2026-11-02 (+7d) | 2026-11-02 → 2026-11-09 (+7d) |
| PRO-TSE-PO-120 | Issuance of Purchase Order for Materials of Treated Sewage Effluent (Tse) | 2026-10-26 → 2026-11-02 (+7d) | 2026-11-02 → 2026-11-09 (+7d) |
| MF | **Manufacturing of Material** | 2026-11-03 → 2026-11-10 (+7d) | 2026-11-30 → 2026-12-07 (+7d) |
| PRO-TSE-MF-120 | Manufacturing of Materials for Treated Sewage Effluent (Tse) | 2026-11-03 → 2026-11-10 (+7d) | 2026-11-30 → 2026-12-07 (+7d) |
| 1DL | **1st Material Delivery & Site Inspection** | 2026-12-01 → 2026-12-08 (+7d) | 2026-12-08 → 2026-12-15 (+7d) |
| PRO-TSE-1DL-120 | 1ST Material Delivery for Materials of Treated Sewage Effluent (Tse) | 2026-12-01 → 2026-12-08 (+7d) | 2026-12-08 → 2026-12-15 (+7d) |
| DL | **Material Delivery & Site Inspection** | 2026-12-09 → 2026-12-16 (+7d) | 2026-12-24 → 2026-12-31 (+7d) |
| PRO-R25-TSE-DL-120 | Material Delivery & Site Inspection of Materials for Treated Sewage Effluent (Tse) | 2026-12-09 → 2026-12-16 (+7d) | 2026-12-24 → 2026-12-31 (+7d) |
| PW | **Potable Water Network** |  | 2027-04-03 → 2027-04-10 (+7d) |
| PO | **Issuance of Purchase Orders** |  | 2026-11-07 → 2026-11-14 (+7d) |
| 3 | **Fire Hydrant** | 2026-10-26 → 2026-11-02 (+7d) | 2026-10-31 → 2026-11-07 (+7d) |
| PRO-PW-PO-120 | Issuance of Purchase Order for Fire Hydrants of Potable Water Network | 2026-10-26 → 2026-11-02 (+7d) | 2026-10-31 → 2026-11-07 (+7d) |
| 4 | **Testing and Finishes** | 2026-11-01 → 2026-11-08 (+7d) | 2026-11-07 → 2026-11-14 (+7d) |
| PRO-PW-PO-130 | Issuance of Purchase Order for Surface Box of Potable Water Network | 2026-11-01 → 2026-11-08 (+7d) | 2026-11-07 → 2026-11-14 (+7d) |
| MF | **Manufacturing of Material** |  | 2027-01-04 → 2027-01-11 (+7d) |
| 1 | **Main Line Sections** |  | 2026-11-22 → 2026-11-29 (+7d) |
| PRO-PW-MF-110 | Manufacturing of Valves for Potable Water Network | 2026-10-26 → 2026-11-02 (+7d) | 2026-11-22 → 2026-11-29 (+7d) |
| 3 | **Fire Hydrant** | 2026-11-23 → 2026-11-30 (+7d) | 2026-12-09 → 2026-12-16 (+7d) |
| PRO-PW-MF-120 | Manufacturing of Fire Hydrants for Potable Water Network | 2026-11-23 → 2026-11-30 (+7d) | 2026-12-09 → 2026-12-16 (+7d) |
| 4 | **Testing and Finishes** | 2026-11-08 → 2026-11-15 (+7d) | 2027-01-04 → 2027-01-11 (+7d) |
| PRO-PW-MF-130 | Manufacturing for Surface Box of Potable Water Network | 2026-11-08 → 2026-11-15 (+7d) | 2027-01-04 → 2027-01-11 (+7d) |
| 1DL | **1st Material Delivery & Site Inspection** |  | 2027-01-12 → 2027-01-19 (+7d) |
| 1 | **Main Line Sections** |  | 2027-01-12 → 2027-01-19 (+7d) |
| PRO-PW-1DL-110 | 1ST Material Delivery for Valves of Potable Water Network | 2027-01-05 → 2027-01-12 (+7d) | 2027-01-12 → 2027-01-19 (+7d) |
| 3 | **Fire Hydrant** | 2027-01-05 → 2027-01-12 (+7d) | 2027-01-12 → 2027-01-19 (+7d) |
| PRO-PW-1DL-120 | 1ST Material Delivery for Fire Hydrants of Potable Water Network | 2027-01-05 → 2027-01-12 (+7d) | 2027-01-12 → 2027-01-19 (+7d) |
| 4 | **Testing and Finishes** | 2027-01-05 → 2027-01-12 (+7d) | 2027-01-12 → 2027-01-19 (+7d) |
| PRO-PW-1DL-130 | 1ST Material Delivery for Finishes of Potable Water Network | 2027-01-05 → 2027-01-12 (+7d) | 2027-01-12 → 2027-01-19 (+7d) |
| DL | **Material Delivery & Site Inspection** |  | 2027-04-03 → 2027-04-10 (+7d) |

| ID | Task | Start | Finish |
| --- | --- | --- | --- |
| 1 | **Main Line Sections** |  | 2027-02-06 → 2027-02-13 (+7d) |
| PRO-R25-PW-DL-110 | Material Delivery & Site Inspection of Valves for Potable Water Network | 2027-01-13 → 2027-01-20 (+7d) | 2027-02-06 → 2027-02-13 (+7d) |
| 3 | **Fire Hydrant** | 2027-01-13 → 2027-01-20 (+7d) | 2027-01-19 → 2027-01-26 (+7d) |
| PRO-R25-PW-DL-120 | Material Delivery & Site Inspection of Fire Hydrants for Potable Water Network | 2027-01-13 → 2027-01-20 (+7d) | 2027-01-19 → 2027-01-26 (+7d) |
| 4 | **Testing and Finishes** | 2027-01-13 → 2027-01-20 (+7d) | 2027-04-03 → 2027-04-10 (+7d) |
| PRO-R25-PW-DL-130 | Material Delivery & Site Inspection for Finishes of Potable Water Network | 2027-01-13 → 2027-01-20 (+7d) | 2027-04-03 → 2027-04-10 (+7d) |
| IR | **Irrigation Network** | 2026-11-08 → 2026-11-15 (+7d) | 2027-02-02 → 2027-02-09 (+7d) |
| PO | **Issuance of Purchase Orders** | 2026-11-08 → 2026-11-15 (+7d) | 2026-11-17 → 2026-11-24 (+7d) |
| 1 | **Main Line Pipes** | 2026-11-08 → 2026-11-15 (+7d) | 2026-11-17 → 2026-11-24 (+7d) |
| PRO-IR-PO-100 | Issuance of Purchase Order for Main Line Pipes of Irrigation Network | 2026-11-08 → 2026-11-15 (+7d) | 2026-11-12 → 2026-11-19 (+7d) |
| PRO-IR-PO-110 | Issuance of Purchase Order for Valves of Irrigation Network | 2026-11-14 → 2026-11-21 (+7d) | 2026-11-17 → 2026-11-24 (+7d) |
| MF | **Manufacturing of Material** | 2026-11-14 → 2026-11-21 (+7d) | 2026-12-31 → 2027-01-07 (+7d) |
| 1 | **Main Line Pipes** | 2026-11-14 → 2026-11-21 (+7d) | 2026-12-31 → 2027-01-07 (+7d) |
| PRO-IR-MF-100 | Manufacturing of Main Line Pipes for Irrigation Network | 2026-11-14 → 2026-11-21 (+7d) | 2026-12-07 → 2026-12-14 (+7d) |
| PRO-IR-MF-110 | Manufacturing of Valves for Irrigation Network | 2026-12-08 → 2026-12-15 (+7d) | 2026-12-31 → 2027-01-07 (+7d) |
| 1DL | **1st Material Delivery & Site Inspection** | 2026-12-08 → 2026-12-15 (+7d) | 2027-01-09 → 2027-01-16 (+7d) |
| 1 | **Main Line Pipes** | 2026-12-08 → 2026-12-15 (+7d) | 2027-01-09 → 2027-01-16 (+7d) |
| PRO-IR-1DL-100 | 1ST Material Delivery for Main Line Pipes of Irrigation Network | 2026-12-08 → 2026-12-15 (+7d) | 2026-12-15 → 2026-12-22 (+7d) |
| PRO-IR-1DL-110 | 1ST Material Delivery for Valves of Irrigation Network | 2027-01-02 → 2027-01-09 (+7d) | 2027-01-09 → 2027-01-16 (+7d) |
| DL | **Material Delivery & Site Inspection** | 2026-12-16 → 2026-12-23 (+7d) | 2027-02-02 → 2027-02-09 (+7d) |
| 1 | **Main Line Pipes** | 2026-12-16 → 2026-12-23 (+7d) | 2027-02-02 → 2027-02-09 (+7d) |
| PRO-R25-IR-DL-100 | Material Delivery & Site Inspection of Main Line Pipes for Irrigation Network | 2026-12-16 → 2026-12-23 (+7d) | 2027-01-09 → 2027-01-16 (+7d) |
| PRO-R25-IR-DL-110 | Material Delivery & Site Inspection of Valves for Irrigation Network | 2027-01-10 → 2027-01-17 (+7d) | 2027-02-02 → 2027-02-09 (+7d) |
| MV | **Medium Voltage Network** | 2026-11-18 → 2026-11-25 (+7d) | 2027-02-02 → 2027-02-09 (+7d) |
| PO | **Issuance of Purchase Orders** | 2026-11-18 → 2026-11-25 (+7d) | 2026-11-24 → 2026-12-01 (+7d) |
| PRO-MV-PO-100 | Issuance of Purchase Order for Medium Voltage Materials of Medium Voltage Network | 2026-11-18 → 2026-11-25 (+7d) | 2026-11-24 → 2026-12-01 (+7d) |
| MF | **Manufacturing of Material** | 2026-11-25 → 2026-12-02 (+7d) | 2026-12-19 → 2026-12-26 (+7d) |
| PRO-MV-MF-100 | Manufacturing of Medium Voltage Materials for Medium Voltage Network | 2026-11-25 → 2026-12-02 (+7d) | 2026-12-19 → 2026-12-26 (+7d) |
| 1DL | **1st Material Delivery & Site Inspection** | 2026-12-20 → 2026-12-27 (+7d) | 2026-12-27 → 2027-01-03 (+7d) |
| PRO-MV-1DL-100 | 1ST Material Delivery for Medium Voltage Materials of Medium Voltage Network | 2026-12-20 → 2026-12-27 (+7d) | 2026-12-27 → 2027-01-03 (+7d) |
| DL | **Material Delivery & Site Inspection** | 2027-01-10 → 2027-01-17 (+7d) | 2027-02-02 → 2027-02-09 (+7d) |
| PRO-MV-DL-100 | Material Delivery & Site Inspection of Medium Voltage Materials for Medium Voltage Network | 2027-01-10 → 2027-01-17 (+7d) | 2027-02-02 → 2027-02-09 (+7d) |
| LV | **Low Voltage Network** | 2026-10-26 → 2026-11-02 (+7d) | 2027-04-05 → 2027-04-12 (+7d) |
| PO | **Issuance of Purchase Orders** | 2026-10-26 → 2026-11-02 (+7d) | 2026-11-26 → 2026-12-03 (+7d) |
| 1 | **Main Low Voltage Cables Works** | 2026-10-26 → 2026-11-02 (+7d) | 2026-11-02 → 2026-11-09 (+7d) |
| PRO-LV-ML-PO-100 | Issuance of Purchase Order for Main Low Voltage Cables of Low Voltage Network | 2026-10-26 → 2026-11-02 (+7d) | 2026-11-02 → 2026-11-09 (+7d) |
| 2 | **Service Low Voltage Cables Works** | 2026-10-26 → 2026-11-02 (+7d) | 2026-11-02 → 2026-11-09 (+7d) |
| PRO-LV-HC-PO-100 | Issuance of Purchase Order for Service Low Voltage Cables of Low Voltage Network | 2026-10-26 → 2026-11-02 (+7d) | 2026-11-02 → 2026-11-09 (+7d) |
| 3 | **Distribution Pillar Works** | 2026-11-03 → 2026-11-10 (+7d) | 2026-11-18 → 2026-11-25 (+7d) |
| PRO-LV-DP-PO-100 | Issuance of Purchase Order for Distribution Pillars of Low Voltage Network | 2026-11-03 → 2026-11-10 (+7d) | 2026-11-10 → 2026-11-17 (+7d) |
| PRO-LV-DP-PO-110 | Issuance of Purchase Order for Low Voltage Earthing of Low Voltage Network | 2026-11-11 → 2026-11-18 (+7d) | 2026-11-18 → 2026-11-25 (+7d) |
| 4 | **Termination and Testing Works** | 2026-11-19 → 2026-11-26 (+7d) | 2026-11-26 → 2026-12-03 (+7d) |
| PRO-LV-TT-PO-100 | Issuance of Purchase Order for Cable Lugs of Low Voltage Network | 2026-11-19 → 2026-11-26 (+7d) | 2026-11-26 → 2026-12-03 (+7d) |
| MF | **Manufacturing of Material** | 2026-11-03 → 2026-11-10 (+7d) | 2027-02-16 → 2027-02-23 (+7d) |
| 1 | **Main Low Voltage Cables Works** | 2026-11-03 → 2026-11-10 (+7d) | 2026-12-07 → 2026-12-14 (+7d) |
| PRO-LV-ML-MF-100 | Manufacturing of Main Low Voltage Cables for Low Voltage Network | 2026-11-03 → 2026-11-10 (+7d) | 2026-12-07 → 2026-12-14 (+7d) |
| 2 | **Service Low Voltage Cables Works** | 2026-11-03 → 2026-11-10 (+7d) | 2026-12-07 → 2026-12-14 (+7d) |
| PRO-LV-HC-MF-100 | Manufacturing of Service Low Voltage Cables for Low Voltage Network | 2026-11-03 → 2026-11-10 (+7d) | 2026-12-07 → 2026-12-14 (+7d) |
| 3 | **Distribution Pillar Works** | 2026-11-11 → 2026-11-18 (+7d) | 2027-01-04 → 2027-01-11 (+7d) |
| PRO-LV-DP-MF-100 | Manufacturing of Distribution Pillars for Low Voltage Network | 2026-11-11 → 2026-11-18 (+7d) | 2026-12-27 → 2027-01-03 (+7d) |
| PRO-LV-DP-MF-110 | Manufacturing of Low Voltage Earthing for Low Voltage Network | 2026-11-19 → 2026-11-26 (+7d) | 2027-01-04 → 2027-01-11 (+7d) |
| 4 | **Termination and Testing Works** | 2026-11-28 → 2026-12-05 (+7d) | 2027-02-16 → 2027-02-23 (+7d) |
| PRO-LV-TT-MF-100 | Manufacturing of Cable Lugs for Low Voltage Network | 2026-11-28 → 2026-12-05 (+7d) | 2027-02-16 → 2027-02-23 (+7d) |
| 1DL | **1st Delivery of Material to Site** | 2026-12-08 → 2026-12-15 (+7d) | 2027-02-17 → 2027-02-24 (+7d) |
| 1 | **Main Low Voltage Cables Works** | 2026-12-08 → 2026-12-15 (+7d) | 2027-01-16 → 2027-01-23 (+7d) |
| PRO-LV-ML-1DL-100 | 1ST Material Delivery for Main Low Voltage Cables of Low Voltage Network | 2026-12-08 → 2026-12-15 (+7d) | 2027-01-16 → 2027-01-23 (+7d) |
| 2 | **Service Low Voltage Cables Works** | 2027-01-17 → 2027-01-24 (+7d) | 2027-01-24 → 2027-01-31 (+7d) |
| PRO-LV-HC-1DL-100 | 1ST Material Delivery for Service Low Voltage Cables of Low Voltage Network | 2027-01-17 → 2027-01-24 (+7d) | 2027-01-24 → 2027-01-31 (+7d) |
| 3 | **Distribution Pillar Works** | 2027-01-25 → 2027-02-01 (+7d) | 2027-02-09 → 2027-02-16 (+7d) |
| PRO-LV-DP-1DL-100 | 1ST Material Delivery for Distribution Pillars of Low Voltage Network | 2027-01-25 → 2027-02-01 (+7d) | 2027-02-01 → 2027-02-08 (+7d) |
| PRO-LV-DP-1DL-110 | 1ST Material Delivery for Low Voltage Earthing of Low Voltage Network | 2027-02-02 → 2027-02-09 (+7d) | 2027-02-09 → 2027-02-16 (+7d) |
| 4 | **Termination and Testing Works** | 2027-02-10 → 2027-02-17 (+7d) | 2027-02-17 → 2027-02-24 (+7d) |
| PRO-LV-TT-1DL-100 | 1ST Material Delivery for Cable Lugs of Low Voltage Network | 2027-02-10 → 2027-02-17 (+7d) | 2027-02-17 → 2027-02-24 (+7d) |
| DL | **Delivery of Material to Site** | 2027-01-17 → 2027-01-24 (+7d) | 2027-04-05 → 2027-04-12 (+7d) |
| 1 | **Main Low Voltage Cables Works** | 2027-01-17 → 2027-01-24 (+7d) | 2027-01-24 → 2027-01-31 (+7d) |
| PRO-LV-ML-DL-100 | Material Delivery of Main Low Voltage Cables for Low Voltage Network | 2027-01-17 → 2027-01-24 (+7d) | 2027-01-24 → 2027-01-31 (+7d) |
| 2 | **Service Low Voltage Cables Works** | 2027-01-25 → 2027-02-01 (+7d) | 2027-02-17 → 2027-02-24 (+7d) |
| PRO-LV-HC-DL-100 | Material Delivery of Service Low Voltage Cables for Low Voltage Network | 2027-01-25 → 2027-02-01 (+7d) | 2027-02-17 → 2027-02-24 (+7d) |
| 3 | **Distribution Pillar Works** | 2027-02-17 → 2027-02-24 (+7d) | 2027-03-15 → 2027-03-22 (+7d) |
| PRO-LV-DP-DL-120 | Material Delivery of Low Voltage Earthing for Low Voltage Network | 2027-02-17 → 2027-02-24 (+7d) | 2027-03-15 → 2027-03-22 (+7d) |

| ID | Task | Start | Finish |
| --- | --- | --- | --- |
| PRO-LV-DP-DL-100 | Material Delivery of Distribution Pillars for Low Voltage Network | 2027-02-18 → 2027-02-25 (+7d) | 2027-03-15 → 2027-03-22 (+7d) |
| 4 | **Termination and Testing Works** | 2027-03-16 → 2027-03-23 (+7d) | 2027-04-05 → 2027-04-12 (+7d) |
| PRO-LV-TT-DL-100 | Material Delivery of Cable Lugs for Low Voltage Network | 2027-03-16 → 2027-03-23 (+7d) | 2027-04-05 → 2027-04-12 (+7d) |
| SL | **Street Lighting Network** | 2026-11-19 → 2026-11-26 (+7d) | 2027-04-22 → 2027-04-29 (+7d) |
| PO | **Issuance of Purchase Orders** | 2026-11-19 → 2026-11-26 (+7d) | 2026-12-08 → 2026-12-15 (+7d) |
| 1 | **Cabling Works** | 2026-11-19 → 2026-11-26 (+7d) | 2026-11-24 → 2026-12-01 (+7d) |
| PRO-SL-PO-100 | Issuance of Purchase Order for Lighting Cables of Street Lighting Network | 2026-11-19 → 2026-11-26 (+7d) | 2026-11-24 → 2026-12-01 (+7d) |
| 2 | **Lighting Poles Works** | 2026-11-19 → 2026-11-26 (+7d) | 2026-11-24 → 2026-12-01 (+7d) |
| PRO-SL-PO-110 | Issuance of Purchase Order for Lighting Poles Foundations of Street Lighting Network | 2026-11-19 → 2026-11-26 (+7d) | 2026-11-24 → 2026-12-01 (+7d) |
| PRO-SL-PO-120 | Issuance of Purchase Order for Lighting Poles of Street Lighting Network | 2026-11-19 → 2026-11-26 (+7d) | 2026-11-24 → 2026-12-01 (+7d) |
| PRO-SL-PO-140 | Issuance of Purchase Order for Lighting Fixtures of Street Lighting Network | 2026-11-19 → 2026-11-26 (+7d) | 2026-11-24 → 2026-12-01 (+7d) |
| 3 | **Distribution Panel Board** | 2026-11-19 → 2026-11-26 (+7d) | 2026-11-25 → 2026-12-02 (+7d) |
| PRO-SL-PO-160 | Issuance of Purchase Order for Distrubution Panel Boards of Street Lighting Network | 2026-11-19 → 2026-11-26 (+7d) | 2026-11-25 → 2026-12-02 (+7d) |
| 4 | **Earthing System Works** | 2026-12-02 → 2026-12-09 (+7d) | 2026-12-08 → 2026-12-15 (+7d) |
| PRO-SL-PO-150 | Issuance of Purchase Order for Lighting Earthing of Street Lighting Network | 2026-12-02 → 2026-12-09 (+7d) | 2026-12-08 → 2026-12-15 (+7d) |
| 5 | **Termination and Testing Works** | 2026-11-25 → 2026-12-02 (+7d) | 2026-12-02 → 2026-12-09 (+7d) |
| PRO-SL-PO-170 | Issuance of Purchase Order for Cable Lugs of Street Lighting Network | 2026-11-25 → 2026-12-02 (+7d) | 2026-12-01 → 2026-12-08 (+7d) |
| PRO-SL-PO-130 | Issuance of Purchase Order for Fuse Boxes of Street Lighting Network | 2026-11-26 → 2026-12-03 (+7d) | 2026-12-02 → 2026-12-09 (+7d) |
| MF | **Manufacturing of Material** | 2026-11-25 → 2026-12-02 (+7d) | 2027-03-22 → 2027-03-29 (+7d) |
| 1 | **Cabling Works** | 2026-11-25 → 2026-12-02 (+7d) | 2026-12-17 → 2026-12-24 (+7d) |
| PRO-SL-MF-100 | Manufacturing of Lighting Cables for Street Lighting Network | 2026-11-25 → 2026-12-02 (+7d) | 2026-12-17 → 2026-12-24 (+7d) |
| 2 | **Lighting Poles Works** | 2026-12-19 → 2026-12-26 (+7d) | 2027-01-11 → 2027-01-18 (+7d) |
| PRO-SL-MF-110 | Manufacturing of Lighting Poles Foundations for Street Lighting Network | 2026-12-19 → 2026-12-26 (+7d) | 2027-01-11 → 2027-01-18 (+7d) |
| PRO-SL-MF-120 | Manufacturing of Lighting Poles for Street Lighting Network | 2026-12-19 → 2026-12-26 (+7d) | 2027-01-11 → 2027-01-18 (+7d) |
| PRO-SL-MF-140 | Manufacturing of Lighting Fixtures for Street Lighting Network | 2026-12-19 → 2026-12-26 (+7d) | 2027-01-11 → 2027-01-18 (+7d) |
| 3 | **Distribution Panel Board** | 2027-01-12 → 2027-01-19 (+7d) | 2027-02-15 → 2027-02-22 (+7d) |
| PRO-SL-MF-160 | Manufacturing of Distrubution Panel Boards for Street Lighting Network | 2027-01-12 → 2027-01-19 (+7d) | 2027-02-15 → 2027-02-22 (+7d) |
| 4 | **Earthing System Works** | 2026-12-09 → 2026-12-16 (+7d) | 2027-01-24 → 2027-01-31 (+7d) |
| PRO-SL-MF-150 | Manufacturing of Lighting Earthing for Street Lighting Network | 2026-12-09 → 2026-12-16 (+7d) | 2027-01-24 → 2027-01-31 (+7d) |
| 5 | **Termination and Testing Works** | 2026-12-03 → 2026-12-10 (+7d) | 2027-03-22 → 2027-03-29 (+7d) |
| PRO-SL-MF-130 | Manufacturing of Fuse Boxes for Street Lighting Network | 2026-12-03 → 2026-12-10 (+7d) | 2027-02-22 → 2027-03-01 (+7d) |
| PRO-SL-MF-170 | Manufacturing of Cable Lugs for Street Lighting Network | 2027-02-23 → 2027-03-02 (+7d) | 2027-03-22 → 2027-03-29 (+7d) |
| 1DL | **1st Material Delivery & Site Inspection** | 2026-12-19 → 2026-12-26 (+7d) | 2027-04-05 → 2027-04-12 (+7d) |
| 1 | **Cabling Works** | 2026-12-19 → 2026-12-26 (+7d) | 2026-12-24 → 2026-12-31 (+7d) |
| PRO-SL-1DL-100 | 1ST Material Delivery for Lighting Cables of Street Lighting Network | 2026-12-19 → 2026-12-26 (+7d) | 2026-12-24 → 2026-12-31 (+7d) |
| 2 | **Lighting Poles Works** | 2027-01-12 → 2027-01-19 (+7d) | 2027-02-01 → 2027-02-08 (+7d) |
| PRO-SL-1DL-110 | 1ST Material Delivery for Lighting Poles Foundations of Street Lighting Network | 2027-01-12 → 2027-01-19 (+7d) | 2027-01-18 → 2027-01-25 (+7d) |
| PRO-SL-1DL-120 | 1ST Material Delivery for Lighting Poles of Street Lighting Network | 2027-01-19 → 2027-01-26 (+7d) | 2027-01-25 → 2027-02-01 (+7d) |
| PRO-SL-1DL-140 | 1ST Material Delivery for Lighting Fixtures of Street Lighting Network | 2027-01-26 → 2027-02-02 (+7d) | 2027-02-01 → 2027-02-08 (+7d) |
| 3 | **Distribution Panel Board** | 2027-02-16 → 2027-02-23 (+7d) | 2027-02-22 → 2027-03-01 (+7d) |
| PRO-SL-1DL-160 | 1ST Material Delivery for Distrubution Panel Boards of Street Lighting Network | 2027-02-16 → 2027-02-23 (+7d) | 2027-02-22 → 2027-03-01 (+7d) |
| 5 | **Termination and Testing Works** | 2027-02-23 → 2027-03-02 (+7d) | 2027-03-29 → 2027-04-05 (+7d) |
| PRO-SL-1DL-130 | 1ST Material Delivery for Fuse Boxes of Street Lighting Network | 2027-02-23 → 2027-03-02 (+7d) | 2027-03-01 → 2027-03-08 (+7d) |
| PRO-SL-1DL-170 | 1ST Material Delivery for Cable Lugs of Street Lighting Network | 2027-03-23 → 2027-03-30 (+7d) | 2027-03-29 → 2027-04-05 (+7d) |
| 4 | **Earthing System Works** | 2027-03-30 → 2027-04-06 (+7d) | 2027-04-05 → 2027-04-12 (+7d) |
| PRO-SL-1DL-150 | 1ST Material Delivery for Lighting Earthing of Street Lighting Network | 2027-03-30 → 2027-04-06 (+7d) | 2027-04-05 → 2027-04-12 (+7d) |
| DL | **Material Delivery & Site Inspection** | 2026-12-26 → 2027-01-02 (+7d) | 2027-04-22 → 2027-04-29 (+7d) |
| 1 | **Cabling Works** | 2026-12-26 → 2027-01-02 (+7d) | 2027-01-18 → 2027-01-25 (+7d) |
| PRO-R25-SL-DL-100 | Material Delivery & Site Inspection of Lighting Cables for Street Lighting Network | 2026-12-26 → 2027-01-02 (+7d) | 2027-01-18 → 2027-01-25 (+7d) |
| 2 | **Lighting Poles Works** | 2027-01-12 → 2027-01-19 (+7d) | 2027-03-01 → 2027-03-08 (+7d) |
| PRO-R25-SL-DL-110 | Material Delivery & Site Inspection of Lighting Poles Foundations for Street Lighting Network | 2027-01-12 → 2027-01-19 (+7d) | 2027-02-04 → 2027-02-11 (+7d) |
| PRO-R25-SL-DL-120 | Material Delivery & Site Inspection of Lighting Poles for Street Lighting Network | 2027-02-06 → 2027-02-13 (+7d) | 2027-03-01 → 2027-03-08 (+7d) |
| PRO-R25-SL-DL-140 | Material Delivery & Site Inspection of Lighting Fixtures for Street Lighting Network | 2027-02-06 → 2027-02-13 (+7d) | 2027-03-01 → 2027-03-08 (+7d) |
| 3 | **Distribution Panel Board** | 2027-03-02 → 2027-03-13 (+11d) | 2027-03-29 → 2027-04-05 (+7d) |
| PRO-R25-SL-DL-160 | Material Delivery & Site Inspection of Distrubution Panel Boards for Street Lighting Network | 2027-03-02 → 2027-03-13 (+11d) | 2027-03-29 → 2027-04-05 (+7d) |
| 4 | **Termination and Testing Works** | 2027-03-30 → 2027-04-06 (+7d) | 2027-04-22 → 2027-04-29 (+7d) |
| PRO-R25-SL-DL-130 | Material Delivery & Site Inspection of Fuse Boxes for Street Lighting Network | 2027-03-30 → 2027-04-06 (+7d) | 2027-04-22 → 2027-04-29 (+7d) |
| PRO-R25-SL-DL-170 | Material Delivery & Site Inspection of Cable Lugs for Street Lighting Network | 2027-03-30 → 2027-04-06 (+7d) | 2027-04-22 → 2027-04-29 (+7d) |
| 5 | **Earthing System Works** | 2027-03-30 → 2027-04-06 (+7d) | 2027-04-22 → 2027-04-29 (+7d) |
| PRO-R25-SL-DL-150 | Material Delivery & Site Inspection of Lighting Earthing for Street Lighting Network | 2027-03-30 → 2027-04-06 (+7d) | 2027-04-22 → 2027-04-29 (+7d) |
| TE | **Telecom and Light Current Network** | 2026-12-02 → 2026-12-09 (+7d) | 2027-03-23 → 2027-03-30 (+7d) |
| PO | **Issuance of Purchase Orders** | 2026-12-02 → 2026-12-09 (+7d) | 2026-12-24 → 2026-12-31 (+7d) |
| 1 | **Ducts Works** | 2026-12-02 → 2026-12-09 (+7d) | 2026-12-09 → 2026-12-16 (+7d) |
| PRO-TE-PO-100 | Issuance of Purchase Order for Ducts forTelecom Network | 2026-12-02 → 2026-12-09 (+7d) | 2026-12-09 → 2026-12-16 (+7d) |
| 3 | **Manholes Works** | 2026-12-02 → 2026-12-09 (+7d) | 2026-12-09 → 2026-12-16 (+7d) |
| PRO-TE-PO-110 | Issuance of Purchase Order for Manholes forTelecom Network | 2026-12-02 → 2026-12-09 (+7d) | 2026-12-09 → 2026-12-16 (+7d) |
| 2 | **CCTV, Telephone, MSN, ACs System Works** | 2026-12-02 → 2026-12-09 (+7d) | 2026-12-24 → 2026-12-31 (+7d) |
| PRO-CTV-PO-100 | Issuance of Purchase Order for Civil and Finishes Works of CCTV Complete System | 2026-12-02 → 2026-12-09 (+7d) | 2026-12-24 → 2026-12-31 (+7d) |
| MF | **Manufacturing of Material** | 2026-12-10 → 2026-12-17 (+7d) | 2027-03-01 → 2027-03-08 (+7d) |
| 1 | **Ducts Works** | 2026-12-10 → 2026-12-17 (+7d) | 2027-01-02 → 2027-01-09 (+7d) |

| ID | Task | Start | Finish |
| --- | --- | --- | --- |
| PRO-TE-MF-100 | Manufacturing of Ducts for Telecom Network | 2026-12-10 → 2026-12-17 (+7d) | 2027-01-02 → 2027-01-09 (+7d) |
| 3 | **Manholes Works** | 2027-01-03 → 2027-01-10 (+7d) | 2027-01-25 → 2027-02-01 (+7d) |
| PRO-TE-MF-110 | Manufacturing of Manholes for Telecom Network | 2027-01-03 → 2027-01-10 (+7d) | 2027-01-25 → 2027-02-01 (+7d) |
| 2 | **CCTV, Telephone, MSN, ACs System Works** | 2027-01-26 → 2027-02-02 (+7d) | 2027-03-01 → 2027-03-08 (+7d) |
| PRO-CTV-MF-100 | Manufacturing of Civil and Finishes Works for CCTV Complete System | 2027-01-26 → 2027-02-02 (+7d) | 2027-03-01 → 2027-03-08 (+7d) |
| 1DL | **1st Material Delivery & Site Inspection** | 2027-01-03 → 2027-01-10 (+7d) | 2027-03-08 → 2027-03-18 (+10d) |
| 1 | **Ducts Works** | 2027-01-03 → 2027-01-10 (+7d) | 2027-01-09 → 2027-01-16 (+7d) |
| PRO-TE-1DL-100 | 1ST Material Delivery for Ducts of Telecom Network | 2027-01-03 → 2027-01-10 (+7d) | 2027-01-09 → 2027-01-16 (+7d) |
| 3 | **Manholes Works** | 2027-01-26 → 2027-02-02 (+7d) | 2027-02-01 → 2027-02-08 (+7d) |
| PRO-TE-1DL-110 | 1ST Material Delivery for Manholes of Telecom Network | 2027-01-26 → 2027-02-02 (+7d) | 2027-02-01 → 2027-02-08 (+7d) |
| 2 | **CCTV, Telephone, MSN, ACs System Works** | 2027-03-02 → 2027-03-13 (+11d) | 2027-03-08 → 2027-03-18 (+10d) |
| PRO-CTV-1DL-100 | 1ST Material Delivery for Civil and Finishes Works of CCTV Complete System | 2027-03-02 → 2027-03-13 (+11d) | 2027-03-08 → 2027-03-18 (+10d) |
| DL | **Material Delivery & Site Inspection** | 2027-01-10 → 2027-01-17 (+7d) | 2027-03-23 → 2027-03-30 (+7d) |
| 1 | **Ducts Works** | 2027-01-10 → 2027-01-17 (+7d) | 2027-01-26 → 2027-02-02 (+7d) |
| PRO-R25-TE-DL-100 | Material Delivery & Site Inspection for Ducts of Telecom Network | 2027-01-10 → 2027-01-17 (+7d) | 2027-01-26 → 2027-02-02 (+7d) |
| 3 | **Manholes Works** | 2027-02-02 → 2027-02-09 (+7d) | 2027-02-18 → 2027-02-25 (+7d) |
| PRO-R25-TE-DL-110 | Material Delivery & Site Inspection of Manholes for Telecom Network | 2027-02-02 → 2027-02-09 (+7d) | 2027-02-18 → 2027-02-25 (+7d) |
| 2 | **CCTV, Telephone, MSN, ACs System Works** | 2027-03-13 → 2027-03-20 (+7d) | 2027-03-23 → 2027-03-30 (+7d) |
| PRO-R25-CTV-DL-100 | Material Delivery & Site Inspection of for Civil and Finishes Works of CCTV Complete System | 2027-03-13 → 2027-03-20 (+7d) | 2027-03-23 → 2027-03-30 (+7d) |
| RD | **Road Works** | 2026-10-26 → 2026-11-02 (+7d) | 2027-05-02 → 2027-05-09 (+7d) |
| PO | **Issuance of Purchase Orders** | 2026-10-26 → 2026-11-02 (+7d) | 2026-12-13 → 2026-12-20 (+7d) |
| 1 | **Road Works** | 2026-10-26 → 2026-11-02 (+7d) | 2026-12-13 → 2026-12-20 (+7d) |
| PRO-RD-PO-100 | Issuance of Purchase Order for Subgrade of Road Works | 2026-10-26 → 2026-11-02 (+7d) | 2026-11-02 → 2026-11-09 (+7d) |
| PRO-RD-PO-110 | Issuance of Purchase Order for Aggregate Base Course of Road Works | 2026-11-03 → 2026-11-10 (+7d) | 2026-11-10 → 2026-11-17 (+7d) |
| PRO-RD-PO-120 | Issuance of Purchase Order for Prime Coat of Road Works | 2026-11-11 → 2026-11-18 (+7d) | 2026-11-18 → 2026-11-25 (+7d) |
| PRO-RD-PO-130 | Issuance of Purchase Order for Asphaltic Base Course Layer of Road Works | 2026-11-19 → 2026-11-26 (+7d) | 2026-11-26 → 2026-12-03 (+7d) |
| PRO-RD-PO-180 | Issuance of Purchase Order for Asphaltic Wearing Course Layer for Roads Network | 2026-11-28 → 2026-12-05 (+7d) | 2026-12-05 → 2026-12-12 (+7d) |
| PRO-RD-PO-190 | Issuance of Purchase Order for Tack Coat Layer for Roads Network | 2026-12-06 → 2026-12-13 (+7d) | 2026-12-13 → 2026-12-20 (+7d) |
| 2 | **Pavement Works** | 2026-11-11 → 2026-11-18 (+7d) | 2026-11-26 → 2026-12-03 (+7d) |
| PRO-RD-PO-140 | Issuance of Purchase Order for Interlock Tiles of Landscaping | 2026-11-11 → 2026-11-18 (+7d) | 2026-11-18 → 2026-11-25 (+7d) |
| PRO-RD-PO-150 | Issuance of Purchase Order for Curbstones of Landscaping | 2026-11-19 → 2026-11-26 (+7d) | 2026-11-26 → 2026-12-03 (+7d) |
| 3 | **Traffic Signs Boards and Roads Marking** | 2026-11-28 → 2026-12-05 (+7d) | 2026-12-13 → 2026-12-20 (+7d) |
| PRO-RD-PO-160 | Issuance of Purchase Order for Traffic Signs Boards of Road Works | 2026-11-28 → 2026-12-05 (+7d) | 2026-12-05 → 2026-12-12 (+7d) |
| PRO-RD-PO-170 | Issuance of Purchase Order for Road Markings of Road Works | 2026-12-06 → 2026-12-13 (+7d) | 2026-12-13 → 2026-12-20 (+7d) |
| MF | **Manufacturing of Material** | 2026-11-03 → 2026-11-10 (+7d) | 2027-03-20 → 2027-03-27 (+7d) |
| 1 | **Road Works** | 2026-11-03 → 2026-11-10 (+7d) | 2027-02-15 → 2027-02-22 (+7d) |
| PRO-RD-MF-100 | Manufacturing of Subgrade for Road Works | 2026-11-03 → 2026-11-10 (+7d) | 2026-11-14 → 2026-11-21 (+7d) |
| PRO-RD-MF-110 | Manufacturing of Aggregate Base Course for Road Works | 2026-11-15 → 2026-11-22 (+7d) | 2026-12-07 → 2026-12-14 (+7d) |
| PRO-RD-MF-120 | Manufacturing of Prime Coat for Road Works | 2026-12-08 → 2026-12-15 (+7d) | 2026-12-30 → 2027-01-06 (+7d) |
| PRO-RD-MF-190 | Manufacturing of Tack Coat Layer for Roads Network | 2026-12-14 → 2026-12-21 (+7d) | 2027-02-09 → 2027-02-16 (+7d) |
| PRO-RD-MF-130 | Manufacturing of Asphaltic Base Course Layer for Road Works | 2026-12-31 → 2027-01-07 (+7d) | 2027-01-23 → 2027-01-30 (+7d) |
| PRO-RD-MF-180 | Manufacturing of Asphaltic Wearing Course Layer for Roads Network | 2027-01-24 → 2027-01-31 (+7d) | 2027-02-15 → 2027-02-22 (+7d) |
| 2 | **Pavement Works** | 2027-02-10 → 2027-02-17 (+7d) | 2027-03-06 → 2027-03-16 (+10d) |
| PRO-RD-MF-140 | Manufacturing of Interlock Tiles for Landscaping | 2027-02-10 → 2027-02-17 (+7d) | 2027-03-06 → 2027-03-16 (+10d) |
| PRO-RD-MF-150 | Manufacturing of Curbstones for Landscaping | 2027-02-10 → 2027-02-17 (+7d) | 2027-03-04 → 2027-03-15 (+11d) |
| 3 | **Traffic Signs Boards and Roads Marking** | 2026-12-06 → 2026-12-13 (+7d) | 2027-03-20 → 2027-03-27 (+7d) |
| PRO-RD-MF-160 | Manufacturing of Traffic Signs Boards for Road Works | 2026-12-06 → 2026-12-13 (+7d) | 2027-03-08 → 2027-03-18 (+10d) |
| PRO-RD-MF-170 | Manufacturing of Road Markings for Road Works | 2026-12-14 → 2026-12-21 (+7d) | 2027-03-20 → 2027-03-27 (+7d) |
| 1DL | **1st Material Delivery & Site Inspection** | 2026-11-15 → 2026-11-22 (+7d) | 2027-04-11 → 2027-04-18 (+7d) |
| 1 | **Road Works** | 2026-11-15 → 2026-11-22 (+7d) | 2027-03-03 → 2027-03-14 (+11d) |
| PRO-RD-1DL-100 | 1ST Material Delivery for Subgrade of Road Works | 2026-11-15 → 2026-11-22 (+7d) | 2026-11-22 → 2026-11-29 (+7d) |
| PRO-RD-1DL-110 | 1ST Material Delivery for Aggregate Base Course of Road Works | 2026-12-08 → 2026-12-15 (+7d) | 2026-12-15 → 2026-12-22 (+7d) |
| PRO-RD-1DL-120 | 1ST Material Delivery for Prime Coat of Road Works | 2026-12-31 → 2027-01-07 (+7d) | 2027-01-17 → 2027-01-24 (+7d) |
| PRO-RD-1DL-130 | 1ST Material Delivery for Asphaltic Base Course Layer of Road Works | 2027-01-24 → 2027-01-31 (+7d) | 2027-01-31 → 2027-02-07 (+7d) |
| PRO-RD-1DL-180 | 1ST Material Delivery for Asphaltic Wearing Course Layer for Roads Network | 2027-02-16 → 2027-02-23 (+7d) | 2027-02-23 → 2027-03-02 (+7d) |
| PRO-RD-1DL-190 | 1ST Material Delivery for Tack Coat Layer for Roads Network | 2027-02-24 → 2027-03-03 (+7d) | 2027-03-03 → 2027-03-14 (+11d) |
| 2 | **Pavement Works** | 2027-03-07 → 2027-03-17 (+10d) | 2027-03-25 → 2027-04-01 (+7d) |
| PRO-RD-1DL-140 | 1ST Material Delivery for Interlock Tiles of Landscaping | 2027-03-07 → 2027-03-17 (+10d) | 2027-03-17 → 2027-03-24 (+7d) |
| PRO-RD-1DL-150 | 1ST Material Delivery for Curbstones of Landscaping | 2027-03-18 → 2027-03-25 (+7d) | 2027-03-25 → 2027-04-01 (+7d) |
| 3 | **Traffic Signs Boards and Roads Marking** | 2027-03-27 → 2027-04-03 (+7d) | 2027-04-11 → 2027-04-18 (+7d) |
| PRO-RD-1DL-170 | 1ST Material Delivery for Road Markings of Road Works | 2027-03-27 → 2027-04-03 (+7d) | 2027-04-03 → 2027-04-10 (+7d) |
| PRO-RD-1DL-160 | 1ST Material Delivery for Traffic Signs Boards of Road Works | 2027-04-04 → 2027-04-11 (+7d) | 2027-04-11 → 2027-04-18 (+7d) |
| DL | **Material Delivery & Site Inspection** | 2026-11-23 → 2026-11-30 (+7d) | 2027-05-02 → 2027-05-09 (+7d) |
| 1 | **Pre-Bituminous Construction** | 2026-11-23 → 2026-11-30 (+7d) | 2027-01-10 → 2027-01-17 (+7d) |
| PRO-R25-RD-DL-100 | Material Delivery & Site Inspection for Subgrade of Road Works | 2026-11-23 → 2026-11-30 (+7d) | 2026-12-16 → 2026-12-23 (+7d) |
| PRO-R25-RD-DL-110 | Material Delivery & Site Inspection for Aggregate Base Course of Road Works | 2026-12-17 → 2026-12-24 (+7d) | 2027-01-10 → 2027-01-17 (+7d) |
| 4 | **Bituminous Construction** | 2027-01-18 → 2027-01-25 (+7d) | 2027-03-24 → 2027-03-31 (+7d) |
| PRO-R25-RD-DL-160 | Material Delivery & Site Inspection for Prime Coat Layer of Road Works | 2027-01-18 → 2027-01-25 (+7d) | 2027-01-30 → 2027-02-06 (+7d) |
| PRO-R25-RD-DL-170 | Material Delivery & Site Inspection for Asphaltic Base Course Layer of Road Works | 2027-02-01 → 2027-02-08 (+7d) | 2027-02-13 → 2027-02-20 (+7d) |
| PRO-RD-DL-200 | Material Delivery for Asphaltic Wearing Course Layer for Roads Network | 2027-02-24 → 2027-03-03 (+7d) | 2027-03-08 → 2027-03-18 (+10d) |

| ID | Task | Start | Finish | Other |
| --- | --- | --- | --- | --- |
| PRO-RD-DL-210 | Material Delivery for Tack Coat Layer for Roads Network | 2027-03-13 → 2027-03-20 (+7d) | 2027-03-24 → 2027-03-31 (+7d) |  |
| 2 | **Pavement Works** | 2027-03-25 → 2027-04-01 (+7d) | 2027-04-19 → 2027-04-26 (+7d) |  |
| PRO-R25-RD-DL-120 | Material Delivery & Site Inspection of Interlock Tiles for Landscaping | 2027-03-25 → 2027-04-01 (+7d) | 2027-04-06 → 2027-04-13 (+7d) |  |
| PRO-R25-RD-DL-130 | Material Delivery & Site Inspection of Curbstones for Landscaping | 2027-04-07 → 2027-04-14 (+7d) | 2027-04-19 → 2027-04-26 (+7d) |  |
| 3 | **Traffic Signs Boards and Roads Marking** | 2027-04-07 → 2027-04-14 (+7d) | 2027-05-02 → 2027-05-09 (+7d) |  |
| PRO-R25-RD-DL-150 | Material Delivery & Site Inspection of Road Markings For Road Works | 2027-04-07 → 2027-04-14 (+7d) | 2027-04-19 → 2027-04-26 (+7d) |  |
| PRO-R25-RD-DL-140 | Material Delivery & Site Inspection of Traffic Signs Boards For Road Works | 2027-04-20 → 2027-04-27 (+7d) | 2027-05-02 → 2027-05-09 (+7d) |  |
| 1 | **Superstructure Works** | 2026-10-26 → 2026-11-02 (+7d) | 2026-12-26 → 2027-01-02 (+7d) |  |
| 1 | **Issuance of Purchase Orders** | 2026-10-26 → 2026-11-02 (+7d) | 2026-11-07 → 2026-11-14 (+7d) |  |
| SL1 | **Water Pump Station** | 2026-10-26 → 2026-11-02 (+7d) | 2026-10-29 → 2026-11-05 (+7d) |  |
| PRO-LS-CV-PO-20 | Issuance of Purchase Order for Works for Water Pump Station | 2026-10-26 → 2026-11-02 (+7d) | 2026-10-29 → 2026-11-05 (+7d) |  |
| SL11 | **Storage Tank (TSE)** | 2026-10-31 → 2026-11-07 (+7d) | 2026-11-07 → 2026-11-14 (+7d) |  |
| PRO-TSE-CV-PO-30 | Issuance of Purchase Order for Works for Storage Tank (TSE) | 2026-10-31 → 2026-11-07 (+7d) | 2026-11-07 → 2026-11-14 (+7d) |  |
| SL111 | **Control Room** | 2026-10-31 → 2026-11-07 (+7d) | 2026-11-07 → 2026-11-14 (+7d) |  |
| PRO-TSE-CV-PO-40 | Issuance of Purchase Order for Works for Control Room | 2026-10-31 → 2026-11-07 (+7d) | 2026-11-07 → 2026-11-14 (+7d) |  |
| SL | **Sewage Pump Stations** | 2026-10-31 → 2026-11-07 (+7d) | 2026-11-07 → 2026-11-14 (+7d) |  |
| PRO-SPS-CV-PO-10 | Issuance of Purchase Order for Works of Sewage Pump Station | 2026-10-31 → 2026-11-07 (+7d) | 2026-11-07 → 2026-11-14 (+7d) |  |
| SL12 | **Gaurd Room** | 2026-10-31 → 2026-11-07 (+7d) | 2026-11-07 → 2026-11-14 (+7d) |  |
| PRO-GR-CV-PO-40 | Issuance of Purchase Order for Materials for Gaurd Room | 2026-10-31 → 2026-11-07 (+7d) | 2026-11-07 → 2026-11-14 (+7d) |  |
| SL121 | **Boundary Fence** | 2026-10-31 → 2026-11-07 (+7d) | 2026-11-07 → 2026-11-14 (+7d) |  |
| PRO-FE-CV-PO-50 | Issuance of Purchase Order for Materials for Boundary Fence | 2026-10-31 → 2026-11-07 (+7d) | 2026-11-07 → 2026-11-14 (+7d) |  |
| 2 | **Manufacturing of Material** | 2026-10-31 → 2026-11-07 (+7d) | 2026-12-01 → 2026-12-08 (+7d) |  |
| SL1 | **Water Pump Station** | 2026-10-31 → 2026-11-07 (+7d) | 2026-11-07 → 2026-11-14 (+7d) |  |
| PRO-LS-CV-MF-30 | Manufacturing of Works for Works for Water Pump Station | 2026-10-31 → 2026-11-07 (+7d) | 2026-11-07 → 2026-11-14 (+7d) |  |
| SL11 | **Storage Tank (TSE)** | 2026-11-08 → 2026-11-15 (+7d) | 2026-11-23 → 2026-11-30 (+7d) |  |
| PRO-TSE-CV-MF-40 | Manufacturing of Works for Storage Tank (TSE) | 2026-11-08 → 2026-11-15 (+7d) | 2026-11-23 → 2026-11-30 (+7d) |  |
| SL111 | **Control Room** | 2026-11-08 → 2026-11-15 (+7d) | 2026-12-01 → 2026-12-08 (+7d) |  |
| PRO-TSE-CV-MF-50 | Manufacturing of Works for Control Room | 2026-11-08 → 2026-11-15 (+7d) | 2026-12-01 → 2026-12-08 (+7d) |  |
| SL | **Sewage Pump Stations** | 2026-11-08 → 2026-11-15 (+7d) | 2026-12-01 → 2026-12-08 (+7d) |  |
| PRO-SPS-CV-MF-10 | Manufacturing of Works of Sewage Pump Station | 2026-11-08 → 2026-11-15 (+7d) | 2026-12-01 → 2026-12-08 (+7d) |  |
| SL12 | **Gaurd Room** | 2026-11-08 → 2026-11-15 (+7d) | 2026-12-01 → 2026-12-08 (+7d) |  |
| PRO-GR-CV-MF-50 | Manufacturing of Materials for Gaurd Room | 2026-11-08 → 2026-11-15 (+7d) | 2026-12-01 → 2026-12-08 (+7d) |  |
| SL121 | **Boundary Fence** | 2026-11-08 → 2026-11-15 (+7d) | 2026-12-01 → 2026-12-08 (+7d) |  |
| PRO-FE-CV-MF-60 | Manufacturing of Materials for Boundary Fence | 2026-11-08 → 2026-11-15 (+7d) | 2026-12-01 → 2026-12-08 (+7d) |  |
| 3 | **1st Material Delivery & Site Inspection** | 2026-10-31 → 2026-11-07 (+7d) | 2026-12-09 → 2026-12-16 (+7d) |  |
| SL1 | **Water Pump Station** | 2026-10-31 → 2026-11-07 (+7d) | 2026-11-05 → 2026-11-12 (+7d) |  |
| PRO-LS-CV-1DL-40 | 1ST Material Delivery for Works of Water Pump Station | 2026-10-31 → 2026-11-07 (+7d) | 2026-11-05 → 2026-11-12 (+7d) |  |
| SL11 | **Storage Tank (TSE)** | 2026-11-24 → 2026-12-01 (+7d) | 2026-12-01 → 2026-12-08 (+7d) |  |
| PRO-TSE-CV-1DL-50 | 1ST Material Delivery for Works for Storage Tank (TSE) | 2026-11-24 → 2026-12-01 (+7d) | 2026-12-01 → 2026-12-08 (+7d) |  |
| SL111 | **Control Room** | 2026-12-02 → 2026-12-09 (+7d) | 2026-12-09 → 2026-12-16 (+7d) |  |
| PRO-TSE-CV-1DL-60 | 1ST Material Delivery for Works for Control Room | 2026-12-02 → 2026-12-09 (+7d) | 2026-12-09 → 2026-12-16 (+7d) |  |
| SL | **Sewage Pump Stations** | 2026-12-02 → 2026-12-09 (+7d) | 2026-12-09 → 2026-12-16 (+7d) |  |
| PRO-SPS-CV-1DL-10 | 1ST Material Delivery for Works of Sewage Pump Station | 2026-12-02 → 2026-12-09 (+7d) | 2026-12-09 → 2026-12-16 (+7d) |  |
| SL12 | **Gaurd Room** | 2026-12-02 → 2026-12-09 (+7d) | 2026-12-09 → 2026-12-16 (+7d) |  |
| PRO-GR-CV-1DL-60 | 1ST Material Delivery for Materials for Gaurd Room | 2026-12-02 → 2026-12-09 (+7d) | 2026-12-09 → 2026-12-16 (+7d) |  |
| SL121 | **Boundary Fence** | 2026-12-02 → 2026-12-09 (+7d) | 2026-12-09 → 2026-12-16 (+7d) |  |
| PRO-FE-CV-1DL-70 | 1ST Material Delivery for Materials for Boundary Fence | 2026-12-02 → 2026-12-09 (+7d) | 2026-12-09 → 2026-12-16 (+7d) |  |
| 4 | **Material Delivery & Site Inspection** | 2026-10-31 → 2026-11-07 (+7d) | 2026-12-26 → 2027-01-02 (+7d) |  |
| SL1 | **Water Pump Station** | 2026-10-31 → 2026-11-07 (+7d) | 2026-11-10 → 2026-11-17 (+7d) |  |
| PRO-LS-CV-DL-50 | Material Delivery & Site Inspection for Works for Water Pump Station | 2026-10-31 → 2026-11-07 (+7d) | 2026-11-10 → 2026-11-17 (+7d) | resources 100 mm thickness lean concrete under the foundation; Foundation; Grade Beams; Slab on grade; Beams; Columns; Slabs; Lightweight Concrete Roof insulation as per Architect's specification; Hollow Concrete masonry unit, 150 mm thick wall for internal block; Insulated brickwork. with expanded polystyrene 200mm thick for External block; Hollow Concrete masonry unit, 300 mm thick wall for External block; 2 perpendicular layers of cold bitumen coats; 2 layer of 4mm HDPE membrane, 2 perpendicular layers cold bitumen coats; 1 layer EPOXY Paint 300 micron; Membrane fully bonded to prime deck and upstand; Geotextile Filter membrane uv resistance; 85mm thick thermal insulation; 1.5mm thick epdm waterproofing membrane; D1 - 1100 mm width x 2200 mm height; D4 - 1800 mm width x 3000 mm height; 1000 mm width x 2400 mm high (L1); Supply and install External plastering to walls and columns min. 15mm thick with cement mortar of specified grade including galvanized mesh, corner beads, angle beads, CE bonds to rough and smooth plaster complete the work as per drawing & specification.; Supply and install 2 coats of weatherproof paint at walls including one prime coat and two coats and putty to give smooth Surface as a base for paint including fiberglass tape to joints and all other accessories as per manufacturers approved specification; Supply and install internal plastering to walls and columns min. 15mm thick with cement mortar of specified grade including galvanized mesh, corner beads, angle beads, CE bonds to rough and smooth plaster complete the work as per drawing & specification.; Supply and install 2 coats of epoxy paint at walls including one prime coat and two coats and putty to give smooth Surface as a base for paint including fiberglass tape to joints and all other accessories as per manufacturers approved specification; Supply and install 300*300mm glazed ceramic wall tiles on cement mortar and including rough and smooth plaster, galvanized mesh, corner beads, angle beads, CE bonds; Acid Proof Tiles; Supply and install 600*600mm porcelain tiles with approved quality on 30 mm mortar including sand fill material as approved by the Client; Supply and install 12.5mm thk, gypsum board suspended ceiling including suspension system, paints as required specification and material as approved by the Client including frames supports, access openings and all other accessories to complete as shown in; 4.5 KG CO2 Type Fire Extinguishers; 6 KG ABC Type Fire Extinguishers; 15 mm dia.; 25 mm dia.; 32 mm dia.; 40 mm dia.; 80 mm dia.; 200 mm dia.; 250 mm dia.; 20 mm; 25 mm; 32 mm; 40 mm; 50 mm; 100 mm; 150 mm; 200 mm; 250 mm; Altitude control valve assembly, size 200 mm; Supply, install, connection, testing and commssionigs horizontal bladder type pressure tank with capacity 1500 liter according to manufacturer's detail and specification - PS-PT-1; Supply, install, connection, testing and commssionigs horizontal bladder type pressure tank with capacity 300 liter according to manufacturer's detail and specification - PS-PT-2; Chemical DosingTank (CDT) 6000 liters capacity polytheylene tank With pump assembly.; Actual capacity 1.5 Ton; Actual capacity 2.0 Ton; Air Flow 280 l/s @ 150 pa; Air Flow 3200 l/s @ 100 pa; Air Flow 110 l/s @ 50 pa; Air Flow 70 l/s @ 50 pa; Air Flow 35 l/s @ 35 pa; Air Flow 105 l/s @ 50 pa; Air Flow 180 l/s @ 0.01 pa; Galvanized sheet metal ducts; Supply Liner Slot diffuser 3 slots 1 inch; Return Liner Slot diffuser 3 slots 1 inch; Exhaust Grill 150mm x 150mm; Sand trap louver 2400mm x 1000mm; Sound attenuator size 1050 x 650 x 1000 m; Pump Set for FF Supply (FP01.FP02); Pump Set for Domestic Supply (BP01 / BP02); Pump Set for Irrigation Supply (IRR01 / IRR02); Pump Set for Drainage System; Pump Set for SW Force Main (1W+1S); acoustical tiles suspended ceiling 600x600mm concealed metal → 4.5 KG CO2 Type Fire Extinguishers; 6 KG ABC Type Fire Extinguishers; 15 mm dia.; 25 mm dia.; 32 mm dia.; 40 mm dia.; 80 mm dia.; 200 mm dia.; 250 mm dia.; 20 mm; 25 mm; 32 mm; 40 mm; 50 mm; 100 mm; 150 mm; 200 mm; 250 mm; Altitude control valve assembly, size 200 mm; Supply, install, connection, testing and commssionigs horizontal bladder type pressure tank with capacity 1500 liter according to manufacturer's detail and specification - PS-PT-1; Supply, install, connection, testing and commssionigs horizontal bladder type pressure tank with capacity 300 liter according to manufacturer's detail and specification - PS-PT-2; Chemical DosingTank (CDT) 6000 liters capacity polytheylene tank With pump assembly.; Actual capacity 1.5 Ton; Actual capacity 2.0 Ton; Air Flow 280 l/s @ 150 pa; Air Flow 3200 l/s @ 100 pa; Air Flow 110 l/s @ 50 pa; Air Flow 70 l/s @ 50 pa; Air Flow 35 l/s @ 35 pa; Air Flow 105 l/s @ 50 pa; Air Flow 180 l/s @ 0.01 pa; Galvanized sheet metal ducts; Supply Liner Slot diffuser 3 slots 1 inch; Return Liner Slot diffuser 3 slots 1 inch; Exhaust Grill 150mm x 150mm; Sand trap louver 2400mm x 1000mm; Sound attenuator size 1050 x 650 x 1000 m; Pump Set for FF Supply (FP01.FP02); Pump Set for Domestic Supply (BP01 / BP02); Pump Set for Irrigation Supply (IRR01 / IRR02); Pump Set for Drainage System; Pump Set for SW Force Main (1W+1S); acoustical tiles suspended ceiling 600x600mm concealed metal; 100 mm thickness lean concrete under the foundation; Foundation; Grade Beams; Slab on grade; Beams; Columns; Slabs; Lightweight Concrete Roof insulation as per Architect's specification; Hollow Concrete masonry unit, 150 mm thick wall for internal block; Insulated brickwork. with expanded polystyrene 200mm thick for External block; Hollow Concrete masonry unit, 300 mm thick wall for External block; 2 perpendicular layers of cold bitumen coats; 2 layer of 4mm HDPE membrane, 2 perpendicular layers cold bitumen coats; 1 layer EPOXY Paint 300 micron; Membrane fully bonded to prime deck and upstand; Geotextile Filter membrane uv resistance; 85mm thick thermal insulation; 1.5mm thick epdm waterproofing membrane; D1 - 1100 mm width x 2200 mm height; D4 - 1800 mm width x 3000 mm height; 1000 mm width x 2400 mm high (L1); Supply and install External plastering to walls and columns min. 15mm thick with cement mortar of specified grade including galvanized mesh, corner beads, angle beads, CE bonds to rough and smooth plaster complete the work as per drawing & specification.; Supply and install 2 coats of weatherproof paint at walls including one prime coat and two coats and putty to give smooth Surface as a base for paint including fiberglass tape to joints and all other accessories as per manufacturers approved specification; Supply and install internal plastering to walls and columns min. 15mm thick with cement mortar of specified grade including galvanized mesh, corner beads, angle beads, CE bonds to rough and smooth plaster complete the work as per drawing & specification.; Supply and install 2 coats of epoxy paint at walls including one prime coat and two coats and putty to give smooth Surface as a base for paint including fiberglass tape to joints and all other accessories as per manufacturers approved specification; Supply and install 300*300mm glazed ceramic wall tiles on cement mortar and including rough and smooth plaster, galvanized mesh, corner beads, angle beads, CE bonds; Acid Proof Tiles; Supply and install 600*600mm porcelain tiles with approved quality on 30 mm mortar including sand fill material as approved by the Client; Supply and install 12.5mm thk, gypsum board suspended ceiling including suspension system, paints as required specification and material as approved by the Client including frames supports, access openings and all other accessories to complete as shown in |
| SL11 | **Storage Tank (TSE)** | 2026-11-11 → 2026-11-18 (+7d) | 2026-12-12 → 2026-12-19 (+7d) |  |
| PRO-TSE-CV-DL-60 | Material Delivery & Site Inspection for Works for Storage Tank (TSE) | 2026-11-11 → 2026-11-18 (+7d) | 2026-12-12 → 2026-12-19 (+7d) |  |
| SL111 | **Control Room** | 2026-12-10 → 2026-12-17 (+7d) | 2026-12-26 → 2027-01-02 (+7d) |  |
| PRO-TSE-CV-DL-70 | Material Delivery & Site Inspection for Works for Control Room | 2026-12-10 → 2026-12-17 (+7d) | 2026-12-26 → 2027-01-02 (+7d) |  |
| SL | **Sewage Pump Stations** | 2026-12-10 → 2026-12-17 (+7d) | 2026-12-26 → 2027-01-02 (+7d) |  |
| PRO-SPS-CV-DL-10 | Material Delivery & Site Inspection for Works for Pump Station | 2026-12-10 → 2026-12-17 (+7d) | 2026-12-26 → 2027-01-02 (+7d) |  |
| SL12 | **Gaurd Room** | 2026-12-10 → 2026-12-17 (+7d) | 2026-12-26 → 2027-01-02 (+7d) |  |
| PRO-GR-CV-DL-70 | Material Delivery & Site Inspection for Materials for Gaurd Room | 2026-12-10 → 2026-12-17 (+7d) | 2026-12-26 → 2027-01-02 (+7d) |  |
| SL121 | **Boundary Fence** | 2026-12-10 → 2026-12-17 (+7d) | 2026-12-26 → 2027-01-02 (+7d) |  |
| PRO-FE-CV-DL-80 | Material Delivery & Site Inspection for Materials for Boundary Fence | 2026-12-10 → 2026-12-17 (+7d) | 2026-12-26 → 2027-01-02 (+7d) |  |
| IR1 | **Softscape and Planting Works** | 2026-11-11 → 2026-11-18 (+7d) | 2027-02-25 → 2027-03-04 (+7d) |  |
| PO | **Issuance of Purchase Orders** | 2026-11-11 → 2026-11-18 (+7d) | 2026-11-24 → 2026-12-01 (+7d) |  |
| 1 | **Main Line Pipes** | 2026-11-11 → 2026-11-18 (+7d) | 2026-11-24 → 2026-12-01 (+7d) |  |
| PRO-IR-PO-140 | Issuance of Purchase Order for Softscape and Planting Works | 2026-11-11 → 2026-11-18 (+7d) | 2026-11-17 → 2026-11-24 (+7d) |  |
| PRO-IR-PO-150 | Issuance of Purchase Order for Site Furnishings (Seating Bench,Stone Boulders and Gravel) | 2026-11-18 → 2026-11-25 (+7d) | 2026-11-24 → 2026-12-01 (+7d) |  |
| MF | **Manufacturing of Material** | 2026-11-18 → 2026-11-25 (+7d) | 2027-02-02 → 2027-02-09 (+7d) |  |
| 1 | **Main Line Pipes** | 2026-11-18 → 2026-11-25 (+7d) | 2027-02-02 → 2027-02-09 (+7d) |  |
| PRO-IR-MF-140 | Manufacturing of Softscape and Planting Works | 2026-11-18 → 2026-11-25 (+7d) | 2027-01-26 → 2027-02-02 (+7d) |  |
| PRO-IR-MF-150 | Manufacturing of Valves for Site Furnishings (Seating Bench,Stone Boulders and Gravel) | 2026-11-25 → 2026-12-02 (+7d) | 2027-02-02 → 2027-02-09 (+7d) |  |
| 1DL | **1st Material Delivery & Site Inspection** | 2027-01-27 → 2027-02-03 (+7d) | 2027-02-09 → 2027-02-16 (+7d) |  |

| ID | Task | Start | Finish | Complete |
| --- | --- | --- | --- | --- |
| 1 | **Main Line Pipes** | 2027-01-27 → 2027-02-03 (+7d) | 2027-02-09 → 2027-02-16 (+7d) |  |
| PRO-IR-1DL-140 | 1ST Material Delivery for Softscape and Planting Works | 2027-01-27 → 2027-02-03 (+7d) | 2027-02-02 → 2027-02-09 (+7d) |  |
| PRO-IR-1DL-150 | 1ST Material Delivery for Site Furnishings (Seating Bench,Stone Boulders and Gravel) | 2027-02-03 → 2027-02-10 (+7d) | 2027-02-09 → 2027-02-16 (+7d) |  |
| DL | **Material Delivery & Site Inspection** | 2027-02-03 → 2027-02-10 (+7d) | 2027-02-25 → 2027-03-04 (+7d) |  |
| 1 | **Main Line Pipes** | 2027-02-03 → 2027-02-10 (+7d) | 2027-02-25 → 2027-03-04 (+7d) |  |
| PRO-R25-IR-DL-140 | Material Delivery & Site Inspection of Softscape and Planting Works | 2027-02-03 → 2027-02-10 (+7d) | 2027-02-14 → 2027-02-21 (+7d) |  |
| PRO-R25-IR-DL-150 | Material Delivery & Site Inspection of Site Furnishings (Seating Bench,Stone Boulders and Gravel) | 2027-02-15 → 2027-02-22 (+7d) | 2027-02-25 → 2027-03-04 (+7d) |  |
| LL | **Long Lead Time Items** | 2026-11-11 → 2026-11-18 (+7d) | 2027-06-20 → 2027-06-27 (+7d) |  |
| 1 | **Superstructure Works** | 2026-11-11 → 2026-11-18 (+7d) | 2027-06-20 → 2027-06-27 (+7d) |  |
| SL | **Sewage Pump Station** | 2026-11-11 → 2026-11-18 (+7d) | 2027-05-06 → 2027-05-13 (+7d) |  |
| 1 | **Issuance of Purchase Orders** | 2026-11-11 → 2026-11-18 (+7d) | 2026-11-17 → 2026-11-24 (+7d) |  |
| PRO-SPS-LL-PO-10 | Issuance of Purchase Order for Electromechanical Works for Pump Station | 2026-11-11 → 2026-11-18 (+7d) | 2026-11-17 → 2026-11-24 (+7d) |  |
| 2 | **Manufacturing of Material** | 2026-11-18 → 2026-11-25 (+7d) | 2027-03-17 → 2027-03-24 (+7d) |  |
| PRO-SPS-LL-MF-10 | Manufacturing of Electromechanical Works for Pump Station | 2026-11-18 → 2026-11-25 (+7d) | 2027-03-17 → 2027-03-24 (+7d) |  |
| 3 | **Material Shipping/Custom Clearance/Delivery** | 2027-03-18 → 2027-03-25 (+7d) | 2027-04-11 → 2027-04-18 (+7d) |  |
| PRO-SPS-LL-SH/DL-10 | Material Delivery for Electromechanical Works for Pump Station | 2027-03-18 → 2027-03-25 (+7d) | 2027-04-11 → 2027-04-18 (+7d) |  |
| 4 | **Material Site Inspection** | 2027-04-12 → 2027-04-19 (+7d) | 2027-05-06 → 2027-05-13 (+7d) |  |
| PRO-SPS-LL-MSI-10 | Material Site Inspection for Electromechanical Works for Pump Station | 2027-04-12 → 2027-04-19 (+7d) | 2027-05-06 → 2027-05-13 (+7d) |  |
| SL1 | **Water Pump Station** | 2026-11-18 → 2026-11-25 (+7d) | 2027-04-08 → 2027-04-15 (+7d) |  |
| 1 | **Issuance of Purchase Orders** | 2026-11-18 → 2026-11-25 (+7d) | 2026-11-25 → 2026-12-02 (+7d) |  |
| PRO-LS-LL-PO-20 | Issuance of Purchase Order for Electromechanical Works for Water Pump Station | 2026-11-18 → 2026-11-25 (+7d) | 2026-11-25 → 2026-12-02 (+7d) |  |
| 2 | **Manufacturing of Material** | 2026-11-26 → 2026-12-03 (+7d) | 2027-02-15 → 2027-02-22 (+7d) |  |
| PRO-LS-LL-MF-20 | Manufacturing of Electromechanical Works for Water Pump Station | 2026-11-26 → 2026-12-03 (+7d) | 2027-02-15 → 2027-02-22 (+7d) |  |
| 3 | **Material Shipping/Custom Clearance/Delivery** | 2027-02-16 → 2027-02-23 (+7d) | 2027-03-15 → 2027-03-22 (+7d) |  |
| PRO-LS-LL-SH/DL-20 | Material Delivery for Electromechanical Works for Water Pump Station | 2027-02-16 → 2027-02-23 (+7d) | 2027-03-15 → 2027-03-22 (+7d) |  |
| 4 | **Material Site Inspection** | 2027-03-16 → 2027-03-23 (+7d) | 2027-04-08 → 2027-04-15 (+7d) |  |
| PRO-LS-LL-MSI-20 | Material Site Inspection for Electromechanical Works for Water Pump Station | 2027-03-16 → 2027-03-23 (+7d) | 2027-04-08 → 2027-04-15 (+7d) |  |
| SL2 | **Storage Tank (TSE)** | 2026-11-26 → 2026-12-03 (+7d) | 2027-06-20 → 2027-06-27 (+7d) |  |
| 1 | **Issuance of Purchase Orders** | 2026-11-26 → 2026-12-03 (+7d) | 2026-12-03 → 2026-12-10 (+7d) |  |
| PRO-TSE-LL-PO-30 | Issuance of Purchase Order for Electromechanical Works for Storage Tank (TSE) | 2026-11-26 → 2026-12-03 (+7d) | 2026-12-03 → 2026-12-10 (+7d) |  |
| 2 | **Manufacturing of Material** | 2026-12-05 → 2026-12-12 (+7d) | 2027-04-26 → 2027-05-03 (+7d) |  |
| PRO-TSE-LL-MF-30 | Manufacturing of Electromechanical Works for Storage Tank (TSE) | 2026-12-05 → 2026-12-12 (+7d) | 2027-04-26 → 2027-05-03 (+7d) |  |
| 3 | **Material Shipping/Custom Clearance/Delivery** | 2027-04-27 → 2027-05-04 (+7d) | 2027-05-26 → 2027-06-02 (+7d) |  |
| PRO-TSE-LL-SH/DL-30 | Material Delivery for Electromechanical Works for Storage Tank (TSE) | 2027-04-27 → 2027-05-04 (+7d) | 2027-05-26 → 2027-06-02 (+7d) |  |
| 4 | **Material Site Inspection** | 2027-05-27 → 2027-06-03 (+7d) | 2027-06-20 → 2027-06-27 (+7d) |  |
| PRO-TSE-LL-MSI-30 | Material Site Inspection for Electromechanical Works for Storage Tank (TSE) | 2027-05-27 → 2027-06-03 (+7d) | 2027-06-20 → 2027-06-27 (+7d) |  |
| CON | **Construction Works** |  | 2027-06-23 → 2027-06-30 (+7d) |  |
| INF | **Infrastructure Networks** |  | 2027-06-21 → 2027-06-28 (+7d) |  |
| IN | **Internal** |  | 2027-06-21 → 2027-06-28 (+7d) |  |
| 1 | **Alignment-RD-01** |  | 2027-06-01 → 2027-06-08 (+7d) |  |
| EW | **Earthworks** |  | 2027-01-06 → 2027-01-13 (+7d) |  |
| EW | **Earthworks** |  | 2027-01-06 → 2027-01-13 (+7d) |  |
| CO-EW-210_R01 | Excavation and Backfilling Works Upto Design Level for Earthworks for Alignment-RD-01(Remaining)-part1 |  | 2027-01-06 → 2027-01-13 (+7d) |  |
| SD | **Storm Drainage Network** |  | 2027-01-04 → 2027-01-11 (+7d) |  |
| MH | **Manholes** | 2026-10-26 → 2026-11-02 (+7d) | 2026-12-12 → 2026-12-19 (+7d) |  |
| CO-SD-MH-230 | Trench Excavation and Bedding Works for Manholes of Storm Drainage Network for Alignment-RD-01 | 2026-10-26 → 2026-11-02 (+7d) | 2026-11-08 → 2026-11-15 (+7d) |  |
| CO-SD-MH-240 | Install RC Footing Works for Manholes of Storm Drainage Network for Alignment-RD-01 | 2026-11-12 → 2026-11-19 (+7d) | 2026-11-22 → 2026-11-29 (+7d) |  |
| CO-SD-MH-250 | Install RC Wall Rings & Slab Works for Manholes of Storm Drainage Network for Alignment-RD-01 | 2026-11-23 → 2026-11-30 (+7d) | 2026-11-30 → 2026-12-07 (+7d) |  |
| CO-SD-MH-260 | Backfilling Works for Manholes of Storm Drainage Network for Alignment-RD-01 | 2026-12-01 → 2026-12-08 (+7d) | 2026-12-12 → 2026-12-19 (+7d) |  |
| ML | **Main Line Sections** |  | 2026-12-19 → 2026-12-26 (+7d) |  |
| CO-SD-ML-140 | Trench Excavation and Bedding Works for Main Lines of Storm Drainage Network for Alignment-RD-01 |  | 2026-12-01 → 2026-12-08 (+7d) |  |
| CO-SD-ML-150 | Pipes Laying Works for Main Lines of Storm Drainage Network for Alignment-RD-01 |  | 2026-12-09 → 2026-12-16 (+7d) |  |
| CO-SD-ML-160 | Trench Backfilling and Compaction Works for Main Lines of Storm Drainage Network for Alignment-RD-01 |  | 2026-12-19 → 2026-12-26 (+7d) |  |
| CB | **Catch Basin Sections** | 2026-12-10 → 2026-12-17 (+7d) | 2027-01-04 → 2027-01-11 (+7d) |  |
| CO-SD-CB-180 | Trench Excavation and Bedding Works for Catch Basins of Storm Drainage Network for Alignment-RD-01 | 2026-12-10 → 2026-12-17 (+7d) | 2026-12-19 → 2026-12-26 (+7d) |  |
| CO-SD-CB-190 | Installation and Pipes Laying Connection Works for Catch Basins of Storm Drainage Network for Alignment-RD-01 | 2026-12-20 → 2026-12-27 (+7d) | 2026-12-27 → 2027-01-03 (+7d) |  |
| CO-SD-CB-200 | Trench Backfilling and Compaction Works for Catch Basins of Storm Drainage Network for Alignment-RD-01 | 2026-12-28 → 2027-01-04 (+7d) | 2027-01-04 → 2027-01-11 (+7d) |  |
| SW | **Sewage Network** | 2026-12-20 → 2026-10-27 (-54d) | 2027-02-27 → 2027-03-06 (+7d) |  |
| 1 | **Manholes** | 2026-12-20 → 2026-12-27 (+7d) | 2027-02-27 → 2027-03-06 (+7d) |  |
| CO-SW-MH-210 | Excavation Works for Main Line Manholes of Sewage Network for Alignment-RD-01 | 2026-12-20 → 2026-12-27 (+7d) | 2027-01-02 → 2027-01-09 (+7d) |  |
| CO-SW-MH-220 | Installation RC Footing Works for Main Line Manholes of Sewage Network for Alignment-RD-01 | 2027-01-03 → 2027-01-10 (+7d) | 2027-01-16 → 2027-01-23 (+7d) |  |
| CO-SW-MH-230 | Install Grp Liner Wall Works for Main Line Manholes of Sewage Network for Alignment-RD-01 | 2027-01-17 → 2027-01-24 (+7d) | 2027-01-30 → 2027-02-06 (+7d) |  |
| CO-SW-MH-240 | Pouring Grp Liner Wall Works for Main Line Manholes of Sewage Network for Alignment-RD-01 | 2027-01-31 → 2027-02-07 (+7d) | 2027-02-13 → 2027-02-20 (+7d) |  |
| CO-SW-MH-250 | Backfilling Works for Main Line Manholes of Sewage Network for Alignment-RD-01 | 2027-02-14 → 2027-02-21 (+7d) | 2027-02-27 → 2027-03-06 (+7d) |  |
| ML | **Main Line Sections** | 2027-01-05 → 2026-10-27 (-70d) | 2027-02-27 → 2027-03-06 (+7d) |  |
| CO-SW-ML-140 | Trench Excavation and Bedding Works for Main Lines of Sewage Network for Alignment-RD-01 | 2027-01-05 → 2026-10-27 A (-70d) | 2027-01-13 → 2027-01-20 (+7d) | 0% → 20% |
| CO-SW-ML-150 | Pipes Laying Works for Main Lines of Sewage Network for Alignment-RD-01 | 2027-01-14 → 2026-10-27 A (-79d) | 2027-01-23 → 2027-01-30 (+7d) | 0% → 20% |
| CO-SW-ML-160 | Trench Backfilling and Compaction Works for Main Lines of Sewage Network for Alignment-RD-01 | 2027-02-21 → 2026-10-27 A (-117d) | 2027-02-27 → 2027-03-06 (+7d) | 0% → 20% |
| TSE | **Treated Sewage Effluent (Tse)** | 2026-12-13 → 2026-12-20 (+7d) | 2027-01-30 → 2027-02-06 (+7d) |  |
| CO-TSE-ML-200 | Trench Excavation and Bedding Works for Main Lines of Treated Sewage Effluent (Tse) for Alignment-RD-01 | 2026-12-13 → 2026-12-20 (+7d) | 2026-12-20 → 2026-12-27 (+7d) |  |

| ID | Task | Start | Finish |
| --- | --- | --- | --- |
| CO-TSE-ML-210 | Pipes Laying Works for Main Lines of Treated Sewage Effluent (Tse) for Alignment-RD-01 | 2026-12-26 → 2027-01-02 (+7d) | 2027-01-13 → 2027-01-20 (+7d) |
| CO-TSE-ML-230 | Trench Backfilling and Compaction Works for Treated Sewage Effluent (Tse) for Alignment-RD-01 | 2027-01-14 → 2027-01-21 (+7d) | 2027-01-30 → 2027-02-06 (+7d) |
| PW | **Potable Water Network** | 2026-12-13 → 2026-12-20 (+7d) | 2027-01-18 → 2027-01-25 (+7d) |
| ML | **Main Line Sections** | 2026-12-13 → 2026-12-20 (+7d) | 2027-01-18 → 2027-01-25 (+7d) |
| CO-PW-ML-140 | Trench Excavation and Bedding Works for Main Lines of Potable Water Network for Alignment-RD-01 | 2026-12-13 → 2026-12-20 (+7d) | 2026-12-19 → 2026-12-26 (+7d) |
| CO-PW-ML-150 | Pipes Laying and accessories for Main Lines of Potable Water Network for Alignment-RD-01 | 2027-01-05 → 2027-01-12 (+7d) | 2027-01-11 → 2027-01-18 (+7d) |
| CO-PW-ML-160 | Trench Backfilling and Compaction Works for Main Lines of Potable Water Network for Alignment-RD-01 | 2027-01-12 → 2027-01-19 (+7d) | 2027-01-18 → 2027-01-25 (+7d) |
| VC | **Valve Chamber** | 2026-12-15 → 2026-12-22 (+7d) | 2027-01-18 → 2027-01-25 (+7d) |
| CO-PW-VC-230 | Excavation Works for Main Line Valves and Valve Chambers of Potable Water Network for Alignment-RD-01 | 2026-12-15 → 2026-12-22 (+7d) | 2026-12-19 → 2026-12-26 (+7d) |
| CO-PW-VC190 | Installation of Valve Chambers of Potable Water Network for Alignment-RD-01 | 2026-12-20 → 2026-12-27 (+7d) | 2026-12-23 → 2026-12-30 (+7d) |
| CO-PW-VC-240 | Installation Works for Valves of Potable Water Network for Alignment-RD-01 | 2026-12-24 → 2026-12-31 (+7d) | 2026-12-28 → 2027-01-04 (+7d) |
| CO-PW-VC-250 | Backfilling Works for Main Line Valves and Valve Chambers of Potable Water Network for Alignment-RD-01 | 2027-01-14 → 2027-01-21 (+7d) | 2027-01-18 → 2027-01-25 (+7d) |
| FH | **Fire Hydrant** | 2026-12-20 → 2026-12-27 (+7d) | 2027-01-18 → 2027-01-25 (+7d) |
| CO-PW-FH-170 | Excavation Works for Fire Hydrants of Potable Water Network for Alignment-RD-01 | 2026-12-20 → 2026-12-27 (+7d) | 2027-01-05 → 2027-01-12 (+7d) |
| CO-PW-FH-180 | Installation Works for Fire Hydrant of Potable Water Network for Alignment-RD-01 | 2027-01-12 → 2027-01-19 (+7d) | 2027-01-14 → 2027-01-21 (+7d) |
| CO-PW-FH-190 | Trench Backfilling and Compaction Works for Fire Hydrants of Potable Water Network for Alignment-RD-01 | 2027-01-16 → 2027-01-23 (+7d) | 2027-01-18 → 2027-01-25 (+7d) |
| IR | **Irrigation Network** | 2027-01-31 → 2027-02-07 (+7d) | 2027-03-16 → 2027-03-23 (+7d) |
| ML | **Main Line Pipes** | 2027-01-31 → 2027-02-07 (+7d) | 2027-03-16 → 2027-03-23 (+7d) |
| CO-IR-ML-150 | Trench Excavation and Bedding Works for Main Lines of Irrigation Network for Alignment-RD-01 | 2027-01-31 → 2027-02-07 (+7d) | 2027-02-07 → 2027-02-14 (+7d) |
| CO-IR-ML-160 | Pipes Laying Works for Main Lines of Irrigation Network for Alignment-RD-01 | 2027-02-08 → 2027-02-15 (+7d) | 2027-02-16 → 2027-02-23 (+7d) |
| CO-IR-ML-170 | Installation Works for Main Line Valves of Irrigation Network for Alignment-RD-01 | 2027-02-17 → 2027-02-24 (+7d) | 2027-02-24 → 2027-03-03 (+7d) |
| CO-IR-ML-190 | Installation Works for Bulbblers And Sprinklers and Irrigation Control System of Irrigation Network for Alignment-RD-01 | 2027-02-25 → 2027-03-04 (+7d) | 2027-03-08 → 2027-03-18 (+10d) |
| CO-IR-ML-180 | Trench Backfilling and Compaction Works for Main Lines of Irrigation Network for Alignment-RD-01 | 2027-03-13 → 2027-03-20 (+7d) | 2027-03-16 → 2027-03-23 (+7d) |
| MV | **Medium Voltage Network** | 2027-02-28 → 2027-03-07 (+7d) | 2027-03-23 → 2027-03-30 (+7d) |
| CW | **Cabling Works** | 2027-02-28 → 2027-03-07 (+7d) | 2027-03-23 → 2027-03-30 (+7d) |
| CO-MV-ML-280 | Trench Excavation and Bedding Works for Medium Voltage Network for Alignment-RD-01 | 2027-02-28 → 2027-03-07 (+7d) | 2027-03-06 → 2027-03-16 (+10d) |
| CO-MV-ML-290 | Duct Laying Works for Medium Voltage Network for Alignment-RD-01 | 2027-03-07 → 2027-03-17 (+10d) | 2027-03-16 → 2027-03-23 (+7d) |
| CO-MV-ML-300 | Trench Backfilling and Compaction Works for Medium Voltage Network for Alignment-RD-01 | 2027-03-17 → 2027-03-24 (+7d) | 2027-03-23 → 2027-03-30 (+7d) |
| LV | **Low Voltage Network** | 2027-03-24 → 2027-03-31 (+7d) | 2027-04-21 → 2027-04-28 (+7d) |
| MLVC | **Main Low Voltage Cables Works ( Cable 300 MM )** | 2027-03-24 → 2027-03-31 (+7d) | 2027-04-13 → 2027-04-20 (+7d) |
| CON-LV-ML-130 | Trench Excavation and Bedding Works for Main Cable of Low Voltage Network for Alignment-RD-01 | 2027-03-24 → 2027-03-31 (+7d) | 2027-03-30 → 2027-04-06 (+7d) |
| CON-LV-ML-140 | Cable Laying Works for Main Cable of Low Voltage Network for Alignment-RD-01 | 2027-03-31 → 2027-04-07 (+7d) | 2027-04-06 → 2027-04-13 (+7d) |
| CON-LV-ML-150 | Trench Backfilling and Compaction Works for Main Cable of Low Voltage Network for Alignment-RD-01 | 2027-04-07 → 2027-04-14 (+7d) | 2027-04-13 → 2027-04-20 (+7d) |
| SLVC | **Service Low Voltage Cables Works ( Cable 70 MM )** | 2027-03-31 → 2027-04-07 (+7d) | 2027-04-21 → 2027-04-28 (+7d) |
| CON-LV-HC-130 | Trench Excavation and Bedding Works for Service Cable of Low Voltage Network for Alignment-RD-01 | 2027-03-31 → 2027-04-07 (+7d) | 2027-04-06 → 2027-04-13 (+7d) |
| CON-LV-HC-140 | Cable Laying Works for Service Cable of Low Voltage Network for Alignment-RD-01 | 2027-04-07 → 2027-04-14 (+7d) | 2027-04-14 → 2027-04-21 (+7d) |
| CON-LV-HC-150 | Trench Backfilling and Compaction Works for Service Cable of Low Voltage Network for Alignment-RD-01 | 2027-04-15 → 2027-04-22 (+7d) | 2027-04-21 → 2027-04-28 (+7d) |
| DP | **Distribution Pillars Works** | 2027-03-31 → 2027-04-07 (+7d) | 2027-04-07 → 2027-04-14 (+7d) |
| CON-LV-DP-130 | Foundation Excavation Works for Distribution Pillars of Low Voltage Network for Alignment-RD-01 | 2027-03-31 → 2027-04-07 (+7d) | 2027-04-07 → 2027-04-14 (+7d) |
| SL | **Street Lighting Network** | 2027-03-07 → 2027-03-17 (+10d) | 2027-04-05 → 2027-04-12 (+7d) |
| LP | **Lighting Poles Works** | 2027-03-07 → 2027-03-17 (+10d) | 2027-03-31 → 2027-04-07 (+7d) |
| CO-SL-LP-350 | Installation Works for Lighting Poles Foundation of Street Lighting Network for Alignment-RD-01 | 2027-03-07 → 2027-03-17 (+10d) | 2027-03-18 → 2027-03-25 (+7d) |
| CO-SL-LP-360 | Installation Works for Lighting Poles of Street Lighting Network for Alignment-RD-01 | 2027-03-20 → 2027-03-27 (+7d) | 2027-03-24 → 2027-03-31 (+7d) |
| CO-SL-LP-380 | Backfilling Works for Lighting Poles of Street Lighting Network for Alignment-RD-01 | 2027-03-25 → 2027-04-01 (+7d) | 2027-03-31 → 2027-04-07 (+7d) |
| CW | **Cabling Works** | 2027-03-25 → 2027-04-01 (+7d) | 2027-04-05 → 2027-04-12 (+7d) |
| CO-SL-CL-290 | Cable Laying Works for Street Lighting Network for Alignment-RD-01 | 2027-03-25 → 2027-04-01 (+7d) | 2027-03-30 → 2027-04-06 (+7d) |
| CO-SL-CL-300 | Trench Backfilling and Compaction Works for Street Lighting Network for Alignment-RD-01 | 2027-03-31 → 2027-04-07 (+7d) | 2027-04-05 → 2027-04-12 (+7d) |
| TE | **Telecom and Light Current Network** | 2027-04-06 → 2027-04-13 (+7d) | 2027-04-29 → 2027-05-06 (+7d) |
| PD | **Ducts Works** | 2027-04-22 → 2027-04-29 (+7d) | 2027-04-29 → 2027-05-06 (+7d) |
| CO-TE-DW-150 | Pipes Laying Works for Ducts of Telecom Network for Alignment-RD-01 | 2027-04-22 → 2027-04-29 (+7d) | 2027-04-26 → 2027-05-03 (+7d) |
| CO-TE-DW-160 | Trench Backfilling and Compaction Works for Ducts of Telecom Network for Alignment-RD-01 | 2027-04-27 → 2027-05-04 (+7d) | 2027-04-29 → 2027-05-06 (+7d) |
| MH | **Manholes Works** | 2027-04-06 → 2027-04-13 (+7d) | 2027-04-14 → 2027-04-21 (+7d) |
| CO-TE-MH-170 | Excavation Works for Manholes of Telecom Network for Alignment-RD-01 | 2027-04-06 → 2027-04-13 (+7d) | 2027-04-10 → 2027-04-17 (+7d) |
| CO-TE-MH-180 | Installation Works for Manholes of Telecom Network for Alignment-RD-01 | 2027-04-06 → 2027-04-13 (+7d) | 2027-04-10 → 2027-04-17 (+7d) |
| CO-TE-MH-190 | Backfilling Works for Manholes of Telecom Network for Alignment-RD-01 | 2027-04-11 → 2027-04-18 (+7d) | 2027-04-14 → 2027-04-21 (+7d) |
| DD | **CCTV, Telephone, MSN, ACs System Works** | 2027-04-15 → 2027-04-22 (+7d) | 2027-04-24 → 2027-05-01 (+7d) |
| CO-TE-CTV-150 | Installation of CCTV, Telephone, ACS and MSN Systems Cables for Alignment-RD-01 | 2027-04-15 → 2027-04-22 (+7d) | 2027-04-24 → 2027-05-01 (+7d) |
| RD | **Road Network** | 2027-05-01 → 2027-05-08 (+7d) | 2027-05-11 → 2027-05-24 (+13d) |
| LS | **Pavement Works** | 2027-05-01 → 2027-05-08 (+7d) | 2027-05-11 → 2027-05-24 (+13d) |
| CO-RD-PV-180 | Fixing of Curbstone for Sidewalks Pavement for Alignment-RD-01 | 2027-05-01 → 2027-05-08 (+7d) | 2027-05-11 → 2027-05-24 (+13d) |
| CO-RD-PV-190 | Fixing of Interlock Tiles for Sidewalks Pavement for Alignment-RD-01 | 2027-05-01 → 2027-05-08 (+7d) | 2027-05-11 → 2027-05-24 (+13d) |
| TS | **Traffic Signs Boards and Roads Marking** | 2027-05-01 → 2027-05-08 (+7d) | 2027-05-09 → 2027-05-22 (+13d) |
| CO-RD-F-RM-190 | Application of Road Marking Works For Road Works for Alignment-RD-01 | 2027-05-01 → 2027-05-08 (+7d) | 2027-05-04 → 2027-05-11 (+7d) |
| CO-RD-F-TS-130 | Installation Works of Traffic Signs Boards For Road Works for Alignment-RD-01 | 2027-05-05 → 2027-05-12 (+7d) | 2027-05-09 → 2027-05-22 (+13d) |
| 3 | **Finishes for Infrastructure Networks** | 2027-03-24 → 2027-03-31 (+7d) | 2027-06-01 → 2027-06-08 (+7d) |
| 11 | **Storm Drainage Network** | 2027-05-01 → 2027-05-08 (+7d) | 2027-06-01 → 2027-06-08 (+7d) |
| TF | **Testing and Finishes** | 2027-05-01 → 2027-05-08 (+7d) | 2027-06-01 → 2027-06-08 (+7d) |
| CO-SD-CB-TF-190 | Catch Basin Internal Finishes (Benching ) for Storm Drainage Network for Alignment-RD-01 | 2027-05-01 → 2027-05-08 (+7d) | 2027-05-06 → 2027-05-13 (+7d) |
| CO-SD-ML-TF-110 | Testing Work for Pipes of Storm Drainage Network for Alignment-RD-01 | 2027-05-08 → 2027-05-20 (+12d) | 2027-05-09 → 2027-05-22 (+13d) |
| CO-SD-MH-TF-230 | Testing Works for Manholes of Storm Drainage Network for Alignment-RD-01 | 2027-05-10 → 2027-05-23 (+13d) | 2027-05-11 → 2027-05-24 (+13d) |

| ID | Task | Start | Finish |
| --- | --- | --- | --- |
| CO-SD-CB-TF-170 | Testing Works for Catch Basins of Storm Drainage Network for Alignment-RD-01 | 2027-05-12 → 2027-05-25 (+13d) | 2027-05-25 → 2027-06-01 (+7d) |
| CO-SD-CB-TF-180 | Install Catch Basin Cover Works for External Finishes of Storm Drainage Network for Alignment-RD-01 | 2027-05-26 → 2027-06-02 (+7d) | 2027-06-01 → 2027-06-08 (+7d) |
| 10 | **Sewage Network** | 2027-05-01 → 2027-05-08 (+7d) | 2027-05-08 → 2027-05-20 (+12d) |
| TF | **Testing and Finishes** | 2027-05-01 → 2027-05-08 (+7d) | 2027-05-08 → 2027-05-20 (+12d) |
| CO-SW-TF-250 | Testing Works for Main Line Manholes of Sewage Network for Alignment-RD-01 | 2027-05-01 → 2027-05-08 (+7d) | 2027-05-03 → 2027-05-10 (+7d) |
| CO-SW-TF-230 | Final Testing For Main Line of Sewage Network for Alignment-RD-01 | 2027-05-04 → 2027-05-11 (+7d) | 2027-05-08 → 2027-05-20 (+12d) |
| 9 | **Potable Water Network** | 2027-05-01 → 2027-05-08 (+7d) | 2027-05-09 → 2027-05-22 (+13d) |
| TF | **Testing and Finishes** | 2027-05-01 → 2027-05-08 (+7d) | 2027-05-09 → 2027-05-22 (+13d) |
| CO-PW-TF-140 | Fire Hydrant Finishies (S.Box + Safety + Marker Post ) of Potable Water Network for Alignment-RD-01 | 2027-05-01 → 2027-05-08 (+7d) | 2027-05-04 → 2027-05-11 (+7d) |
| CO-PW-TF-150 | Final Finishes works and Covers for Valves and Valve Chambers for Alignment-RD-01 | 2027-05-05 → 2027-05-12 (+7d) | 2027-05-06 → 2027-05-13 (+7d) |
| CO-PW-TF-220 | Testing of Potable Water Network for Alignment-RD-01 | 2027-05-08 → 2027-05-20 (+12d) | 2027-05-09 → 2027-05-22 (+13d) |
| 13 | **Irrigation Network** | 2027-05-10 → 2027-05-23 (+13d) | 2027-05-11 → 2027-05-24 (+13d) |
| TF | **Testing and Finishes** | 2027-05-10 → 2027-05-23 (+13d) | 2027-05-11 → 2027-05-24 (+13d) |
| CO-IR-TF-170 | Final Testing (pressure tests) of Irrigation Network for Alignment-RD-01 | 2027-05-10 → 2027-05-23 (+13d) | 2027-05-11 → 2027-05-24 (+13d) |
| 1 | **Treated Sewage Effluent (Tse)** | 2027-05-10 → 2027-05-23 (+13d) | 2027-05-11 → 2027-05-24 (+13d) |
| TF | **Testing and Finishes** | 2027-05-10 → 2027-05-23 (+13d) | 2027-05-11 → 2027-05-24 (+13d) |
| CO-TSE-TF-210 | Final Testing (pressure tests) of Treated Sewage Effluent (Tse) for Alignment-RD-01 | 2027-05-10 → 2027-05-23 (+13d) | 2027-05-11 → 2027-05-24 (+13d) |
| 14 | **Medium Voltage Network** | 2027-03-24 → 2027-03-31 (+7d) | 2027-03-25 → 2027-04-01 (+7d) |
| TT | **Termination and Testing Works** | 2027-03-24 → 2027-03-31 (+7d) | 2027-03-25 → 2027-04-01 (+7d) |
| CO-MV-TF-230 | Testing and Termination Works of Medium Voltage Network for Alignment-RD-01 | 2027-03-24 → 2027-03-31 (+7d) | 2027-03-25 → 2027-04-01 (+7d) |
| 6 | **Low Voltage Network** | 2027-04-22 → 2027-04-29 (+7d) | 2027-04-26 → 2027-05-03 (+7d) |
| TT | **Termination and Testing Works** | 2027-04-22 → 2027-04-29 (+7d) | 2027-04-26 → 2027-05-03 (+7d) |
| CON-LV-TT-120 | Testing and Termination Works for Substation Low Voltage Panel Boards of Low Voltage Network for Alignment-RD-01 | 2027-04-22 → 2027-04-29 (+7d) | 2027-04-26 → 2027-05-03 (+7d) |
| 12 | **Street Lighting Network** | 2027-04-06 → 2027-04-13 (+7d) | 2027-05-02 → 2027-05-09 (+7d) |
| TR | **Termination and Testing Works** | 2027-04-06 → 2027-04-13 (+7d) | 2027-05-02 → 2027-05-09 (+7d) |
| CO-SL-LP-370 | Installation Works for Lighting Fixtures With Drop Wire of Street Lighting Network for Alignment-RD-01 | 2027-04-06 → 2027-04-13 (+7d) | 2027-04-12 → 2027-04-19 (+7d) |
| CO-SL-TF-410 | Testing Works for Lighting Poles of Street Lighting Network for Alignment-RD-01 | 2027-04-29 → 2027-05-06 (+7d) | 2027-05-02 → 2027-05-09 (+7d) |
| ES | **Earthing System Works** | 2027-04-24 → 2027-05-01 (+7d) | 2027-04-28 → 2027-05-05 (+7d) |
| CO-SL-ES-240 | Install Earthing System Works for Lighting Poles of Street Lighting Network for Alignment-RD-01 | 2027-04-24 → 2027-05-01 (+7d) | 2027-04-26 → 2027-05-03 (+7d) |
| CO-SL-ES-250 | Install Earthing System Works for Lighting Panel Boards of Street Lighting Network for Alignment-RD-01 | 2027-04-27 → 2027-05-04 (+7d) | 2027-04-28 → 2027-05-05 (+7d) |
| 3 | **Telecom and Light Current Network** | 2027-05-01 → 2027-05-08 (+7d) | 2027-05-06 → 2027-05-13 (+7d) |
| 1 | **Testing and Finishes** | 2027-05-01 → 2027-05-08 (+7d) | 2027-05-06 → 2027-05-13 (+7d) |
| CO-TE-CTV-TF-180 | Testing and Interface modules with Telecom for Alignment-RD-01 | 2027-05-01 → 2027-05-08 (+7d) | 2027-05-03 → 2027-05-10 (+7d) |
| CO-TE-CTV-TF-310 | Testing and Interface modules with CCTV, Telephone, MSN and Access Control for Alignment-RD-01 | 2027-05-04 → 2027-05-11 (+7d) | 2027-05-06 → 2027-05-13 (+7d) |
| 5 | **Alignment-RD-02** | 2026-11-22 → 2026-11-29 (+7d) | 2027-06-21 → 2027-06-28 (+7d) |
| EW | **Earthworks** | 2026-11-22 → 2026-11-29 (+7d) | 2026-12-05 → 2026-12-12 (+7d) |
| EW | **Earthworks** | 2026-11-22 → 2026-11-29 (+7d) | 2026-12-05 → 2026-12-12 (+7d) |
| CO-EW-220 | Excavation and Backfilling Works Upto Design Level for Earthworks for Alignment-RD-02 | 2026-11-22 → 2026-11-29 (+7d) | 2026-12-05 → 2026-12-12 (+7d) |
| SD | **Storm Drainage Network** | 2026-12-06 → 2026-12-13 (+7d) | 2027-03-27 → 2027-04-03 (+7d) |
| MH | **Manholes** | 2026-12-06 → 2026-12-13 (+7d) | 2026-12-20 → 2026-12-27 (+7d) |
| CO-SD-MH-270 | Trench Excavation and Bedding Works for Manholes of Storm Drainage Network for Alignment-RD-02 | 2026-12-06 → 2026-12-13 (+7d) | 2026-12-09 → 2026-12-16 (+7d) |
| CO-SD-MH-280 | Install RC Footing Works for Manholes of Storm Drainage Network for Alignment-RD-02 | 2026-12-10 → 2026-12-17 (+7d) | 2026-12-13 → 2026-12-20 (+7d) |
| CO-SD-MH-290 | Install RC Wall Rings & Slab Works for Manholes of Storm Drainage Network for Alignment-RD-02 | 2026-12-14 → 2026-12-21 (+7d) | 2026-12-16 → 2026-12-23 (+7d) |
| CO-SD-MH-300 | Backfilling Works for Manholes of Storm Drainage Network for Alignment-RD-02 | 2026-12-17 → 2026-12-24 (+7d) | 2026-12-20 → 2026-12-27 (+7d) |
| ML | **Main Line Sections** | 2026-12-17 → 2026-12-24 (+7d) | 2026-12-27 → 2027-01-03 (+7d) |
| CO-SD-ML-170 | Trench Excavation and Bedding Works for Main Lines of Storm Drainage Network for Alignment-RD-02 | 2026-12-17 → 2026-12-24 (+7d) | 2026-12-20 → 2026-12-27 (+7d) |
| CO-SD-ML-180 | Pipes Laying Works for Main Lines of Storm Drainage Network for Alignment-RD-02 | 2026-12-21 → 2026-12-28 (+7d) | 2026-12-23 → 2026-12-30 (+7d) |
| CO-SD-ML-190 | Trench Backfilling and Compaction Works for Main Lines of Storm Drainage Network for Alignment-RD-02 | 2026-12-24 → 2026-12-31 (+7d) | 2026-12-27 → 2027-01-03 (+7d) |
| CB | **Catch Basin Sections** | 2026-12-28 → 2027-01-04 (+7d) | 2027-03-27 → 2027-04-03 (+7d) |
| CO-SD-CB-210 | Trench Excavation and Bedding Works for Catch Basins of Storm Drainage Network for Alignment-RD-02 | 2026-12-28 → 2027-01-04 (+7d) | 2027-01-17 → 2027-01-24 (+7d) |
| CO-SD-CB-220 | Installation and Pipes Laying Connection Works for Catch Basins of Storm Drainage Network for Alignment-RD-02 | 2027-01-18 → 2027-01-25 (+7d) | 2027-02-08 → 2027-02-15 (+7d) |
| CO-SD-CB-230 | Trench Backfilling and Compaction Works for Catch Basins of Storm Drainage Network for Alignment-RD-02 | 2027-03-22 → 2027-03-29 (+7d) | 2027-03-27 → 2027-04-03 (+7d) |
| SW | **Sewage Network** | 2026-12-28 → 2027-01-04 (+7d) | 2027-03-04 → 2027-03-15 (+11d) |
| 1 | **Manholes** | 2026-12-28 → 2027-01-04 (+7d) | 2027-03-04 → 2027-03-15 (+11d) |
| CO-SW-MH-260 | Excavation Works for Main Line Manholes of Sewage Network for Alignment-RD-02 | 2026-12-28 → 2027-01-04 (+7d) | 2027-01-09 → 2027-01-16 (+7d) |
| CO-SW-MH-270 | Installation RC Footing Works for Main Line Manholes of Sewage Network for Alignment-RD-02 | 2027-01-10 → 2027-01-17 (+7d) | 2027-01-21 → 2027-01-28 (+7d) |
| CO-SW-MH-280 | Install Grp Liner Wall Works for Main Line Manholes of Sewage Network for Alignment-RD-02 | 2027-01-23 → 2027-01-30 (+7d) | 2027-02-04 → 2027-02-11 (+7d) |
| CO-SW-MH-290 | Pouring Grp Liner Wall Works for Main Line Manholes of Sewage Network for Alignment-RD-02 | 2027-02-06 → 2027-02-13 (+7d) | 2027-02-18 → 2027-02-25 (+7d) |
| CO-SW-MH-300 | Backfilling Works for Main Line Manholes of Sewage Network for Alignment-RD-02 | 2027-02-20 → 2027-02-27 (+7d) | 2027-03-04 → 2027-03-15 (+11d) |
| ML | **Main Line Sections** | 2026-12-28 → 2027-01-04 (+7d) | 2027-03-04 → 2027-03-15 (+11d) |
| CO-SW-ML-170 | Trench Excavation and Bedding Works for Main Lines of Sewage Network for Alignment-RD-02 | 2026-12-28 → 2027-01-04 (+7d) | 2027-01-09 → 2027-01-16 (+7d) |
| CO-SW-ML-180 | Pipes Laying Works for Main Lines of Sewage Network for Alignment-RD-02 | 2027-01-10 → 2027-01-17 (+7d) | 2027-01-21 → 2027-01-28 (+7d) |
| CO-SW-ML-190 | Trench Backfilling and Compaction Works for Main Lines of Sewage Network for Alignment-RD-02 | 2027-02-21 → 2027-02-28 (+7d) | 2027-03-04 → 2027-03-15 (+11d) |
| TSE | **Treated Sewage Effluent (Tse)** | 2026-12-28 → 2027-01-04 (+7d) | 2027-02-13 → 2027-02-20 (+7d) |
| CO-TSE-ML-250 | Trench Excavation and Bedding Works for Main Lines of Treated Sewage Effluent (Tse) for Alignment-RD-02 | 2026-12-28 → 2027-01-04 (+7d) | 2027-01-10 → 2027-01-17 (+7d) |
| CO-TSE-ML-260 | Pipes Laying Works for Main Lines of Treated Sewage Effluent (Tse) for Alignment-RD-02 | 2027-01-11 → 2027-01-18 (+7d) | 2027-01-30 → 2027-02-06 (+7d) |
| CO-TSE-ML-280 | Trench Backfilling and Compaction Works for Treated Sewage Effluent (Tse) for Alignment-RD-02 | 2027-01-31 → 2027-02-07 (+7d) | 2027-02-13 → 2027-02-20 (+7d) |
| PW | **Potable Water Network** | 2027-02-14 → 2027-02-21 (+7d) | 2027-03-06 → 2027-03-16 (+10d) |
| ML | **Main Line Sections** | 2027-02-14 → 2027-02-21 (+7d) | 2027-03-04 → 2027-03-15 (+11d) |
| CO-PW-ML-170 | Trench Excavation and Bedding Works for Main Lines of Potable Water Network for Alignment-RD-02 | 2027-02-14 → 2027-02-21 (+7d) | 2027-02-18 → 2027-02-25 (+7d) |

| ID | Task | Start | Finish |
| --- | --- | --- | --- |
| CO-PW-ML-180 | Pipes Laying and accessories for Main Lines of Potable Water Network for Alignment-RD-02 | 2027-02-20 → 2027-02-27 (+7d) | 2027-02-27 → 2027-03-06 (+7d) |
| CO-PW-ML-190 | Trench Backfilling and Compaction Works for Main Lines of Potable Water Network for Alignment-RD-02 | 2027-02-28 → 2027-03-07 (+7d) | 2027-03-04 → 2027-03-15 (+11d) |
| VC | **Valve Chamber** | 2027-02-14 → 2027-02-21 (+7d) | 2027-03-06 → 2027-03-16 (+10d) |
| CO-PW-VC-260 | Excavation Works for Main Line Valves and Valve Chambers of Potable Water Network for Alignment-RD-02 | 2027-02-14 → 2027-02-21 (+7d) | 2027-02-18 → 2027-02-25 (+7d) |
| CO-PW-VC200 | Installation of Valve Chambers of Potable Water Network for Alignment-RD-02 | 2027-02-20 → 2027-02-27 (+7d) | 2027-02-22 → 2027-03-01 (+7d) |
| CO-PW-VC-270 | Installation Works for Valves of Potable Water Network for Alignment-RD-02 | 2027-02-23 → 2027-03-02 (+7d) | 2027-02-28 → 2027-03-07 (+7d) |
| CO-PW-VC-280 | Backfilling Works for Main Line Valves and Valve Chambers of Potable Water Network for Alignment-RD-02 | 2027-03-01 → 2027-03-08 (+7d) | 2027-03-06 → 2027-03-16 (+10d) |
| FH | **Fire Hydrant** | 2027-02-20 → 2027-02-27 (+7d) | 2027-03-06 → 2027-03-16 (+10d) |
| CO-PW-FH-200 | Excavation Works for Fire Hydrants of Potable Water Network for Alignment-RD-02 | 2027-02-20 → 2027-02-27 (+7d) | 2027-02-22 → 2027-03-01 (+7d) |
| CO-PW-FH-210 | Installation Works for Fire Hydrant of Potable Water Network for Alignment-RD-02 | 2027-02-28 → 2027-03-07 (+7d) | 2027-03-02 → 2027-03-13 (+11d) |
| CO-PW-FH-220 | Trench Backfilling and Compaction Works for Fire Hydrants of Potable Water Network for Alignment-RD-02 | 2027-03-03 → 2027-03-14 (+11d) | 2027-03-06 → 2027-03-16 (+10d) |
| IR | **Irrigation Network** | 2027-02-21 → 2027-02-28 (+7d) | 2027-03-16 → 2027-03-23 (+7d) |
| ML | **Main Line Pipes** | 2027-02-21 → 2027-02-28 (+7d) | 2027-03-16 → 2027-03-23 (+7d) |
| CO-IR-ML-200 | Trench Excavation and Bedding Works for Main Lines of Irrigation Network for Alignment-RD-02 | 2027-02-21 → 2027-02-28 (+7d) | 2027-02-23 → 2027-03-02 (+7d) |
| CO-IR-ML-210 | Pipes Laying Works for Main Lines of Irrigation Network for Alignment-RD-02 | 2027-02-28 → 2027-03-07 (+7d) | 2027-03-02 → 2027-03-13 (+11d) |
| CO-IR-ML-220 | Installation Works for Main Line Valves of Irrigation Network for Alignment-RD-02 | 2027-03-03 → 2027-03-14 (+11d) | 2027-03-06 → 2027-03-16 (+10d) |
| CO-IR-ML-240 | Installation Works for Bulbblers And Sprinkler and Irrigation Control System of Irrigation Network for Alignment-RD-02 | 2027-03-07 → 2027-03-17 (+10d) | 2027-03-13 → 2027-03-20 (+7d) |
| CO-IR-ML-230 | Trench Backfilling and Compaction Works for Main Lines of Irrigation Network for Alignment-RD-02 | 2027-03-14 → 2027-03-21 (+7d) | 2027-03-16 → 2027-03-23 (+7d) |
| MV | **Medium Voltage Network** | 2027-03-28 → 2027-04-04 (+7d) | 2027-04-10 → 2027-04-17 (+7d) |
| CW | **Cabling Works** | 2027-03-28 → 2027-04-04 (+7d) | 2027-04-10 → 2027-04-17 (+7d) |
| CO-MV-ML-310 | Trench Excavation and Bedding Works for Medium Voltage Network for Alignment-RD-02 | 2027-03-28 → 2027-04-04 (+7d) | 2027-03-31 → 2027-04-07 (+7d) |
| CO-MV-ML-320 | Duct Laying Works for Medium Voltage Network for Alignment-RD-02 | 2027-04-01 → 2027-04-08 (+7d) | 2027-04-05 → 2027-04-12 (+7d) |
| CO-MV-ML-330 | Trench Backfilling and Compaction Works for Medium Voltage Network for Alignment-RD-02 | 2027-04-06 → 2027-04-13 (+7d) | 2027-04-10 → 2027-04-17 (+7d) |
| LV | **Low Voltage Network** | 2027-03-17 → 2027-03-24 (+7d) | 2027-05-02 → 2027-05-09 (+7d) |
| MLVC | **Main Low Voltage Cables Works ( Cable 300 MM )** | 2027-03-17 → 2027-03-24 (+7d) | 2027-04-26 → 2027-05-03 (+7d) |
| CON-LV-ML-170 | Cable Laying Works for Main Cable of Low Voltage Network for Alignment-RD-02 | 2027-03-17 → 2027-03-24 (+7d) | 2027-03-30 → 2027-04-06 (+7d) |
| CON-LV-ML-160 | Trench Excavation and Bedding Works for Main Cable of Low Voltage Network for Alignment-RD-02 | 2027-04-11 → 2027-04-18 (+7d) | 2027-04-15 → 2027-04-22 (+7d) |
| CON-LV-ML-180 | Trench Backfilling and Compaction Works for Main Cable of Low Voltage Network for Alignment-RD-02 | 2027-04-17 → 2027-04-24 (+7d) | 2027-04-26 → 2027-05-03 (+7d) |
| SLVC | **Service Low Voltage Cables Works ( Cable 70 MM )** | 2027-04-17 → 2027-04-24 (+7d) | 2027-05-02 → 2027-05-09 (+7d) |
| CON-LV-HC-160 | Trench Excavation and Bedding Works for Service Cable of Low Voltage Network for Alignment-RD-02 | 2027-04-17 → 2027-04-24 (+7d) | 2027-04-20 → 2027-04-27 (+7d) |
| CON-LV-HC-170 | Cable Laying Works for Service Cable of Low Voltage Network for Alignment-RD-02 | 2027-04-21 → 2027-04-28 (+7d) | 2027-04-27 → 2027-05-04 (+7d) |
| CON-LV-HC-180 | Trench Backfilling and Compaction Works for Service Cable of Low Voltage Network for Alignment-RD-02 | 2027-04-28 → 2027-05-05 (+7d) | 2027-05-02 → 2027-05-09 (+7d) |
| DP | **Distribution Pillars Works** | 2027-04-11 → 2027-04-18 (+7d) | 2027-04-26 → 2027-05-03 (+7d) |
| CON-LV-DP-160 | Foundation Excavation Works for Distribution Pillars of Low Voltage Network for Alignment-RD-02 | 2027-04-11 → 2027-04-18 (+7d) | 2027-04-17 → 2027-04-24 (+7d) |
| CON-LV-DP-170 | Pouring Plain Concrete For Distribution Pillar Units of Low Voltage Network for Alignment-RD-02 | 2027-04-18 → 2027-04-25 (+7d) | 2027-04-21 → 2027-04-28 (+7d) |
| CON-LV-DP-180 | Installation Works for Distribution Pillar Units of Low Voltage Network for Alignment-RD-02 | 2027-04-22 → 2027-04-29 (+7d) | 2027-04-26 → 2027-05-03 (+7d) |
| SL | **Street Lighting Network** | 2027-04-18 → 2027-04-25 (+7d) | 2027-05-11 → 2027-05-24 (+13d) |
| LP | **Lighting Poles Works** | 2027-04-18 → 2027-04-25 (+7d) | 2027-04-29 → 2027-05-06 (+7d) |
| CO-SL-LP-400 | Installation Works for Lighting Poles Foundation of Street Lighting Network for Alignment-RD-02 | 2027-04-18 → 2027-04-25 (+7d) | 2027-04-21 → 2027-04-28 (+7d) |
| CO-SL-LP-410 | Installation Works for Lighting Poles of Street Lighting Network for Alignment-RD-02 | 2027-04-22 → 2027-04-29 (+7d) | 2027-04-26 → 2027-05-03 (+7d) |
| CO-SL-LP-430 | Backfilling Works for Lighting Poles of Street Lighting Network for Alignment-RD-02 | 2027-04-27 → 2027-05-04 (+7d) | 2027-04-29 → 2027-05-06 (+7d) |
| CW | **Cabling Works** | 2027-04-18 → 2027-04-25 (+7d) | 2027-04-25 → 2027-05-02 (+7d) |
| CO-SL-CL-320 | Cable Laying Works for Street Lighting Network for Alignment-RD-02 | 2027-04-18 → 2027-04-25 (+7d) | 2027-04-21 → 2027-04-28 (+7d) |
| CO-SL-CL-330 | Trench Backfilling and Compaction Works for Street Lighting Network for Alignment-RD-02 | 2027-04-22 → 2027-04-29 (+7d) | 2027-04-25 → 2027-05-02 (+7d) |
| DPB | **Distrubution Panel Boards** | 2027-05-01 → 2027-05-08 (+7d) | 2027-05-11 → 2027-05-24 (+13d) |
| CO-SL-DB-330 | Installation Works for Panel Board Concrete Foundations of Street Lighting Network for Alignment-RD-02 | 2027-05-01 → 2027-05-08 (+7d) | 2027-05-03 → 2027-05-10 (+7d) |
| CO-SL-DB-340 | Installation Works for Lighting Panel Boards of Street Lighting Network for Alignment-RD-02 | 2027-05-04 → 2027-05-11 (+7d) | 2027-05-11 → 2027-05-24 (+13d) |
| TE | **Telecom and Light Current Network** | 2027-04-11 → 2027-04-18 (+7d) | 2027-05-29 → 2027-06-05 (+7d) |
| PD | **Ducts Works** | 2027-05-12 → 2027-05-25 (+13d) | 2027-05-29 → 2027-06-05 (+7d) |
| CO-TE-DW-190 | Pipes Laying Works for Ducts of Telecom Network for Alignment-RD-02 | 2027-05-12 → 2027-05-25 (+13d) | 2027-05-23 → 2027-05-30 (+7d) |
| CO-TE-DW-200 | Trench Backfilling and Compaction Works for Ducts of Telecom Network for Alignment-RD-02 | 2027-05-24 → 2027-05-31 (+7d) | 2027-05-29 → 2027-06-05 (+7d) |
| MH | **Manholes Works** | 2027-04-11 → 2027-04-18 (+7d) | 2027-04-20 → 2027-04-27 (+7d) |
| CO-TE-MH-200 | Excavation Works for Manholes of Telecom Network for Alignment-RD-02 | 2027-04-11 → 2027-04-18 (+7d) | 2027-04-13 → 2027-04-20 (+7d) |
| CO-TE-MH-210 | Installation Works for Manholes of Telecom Network for Alignment-RD-02 | 2027-04-14 → 2027-04-21 (+7d) | 2027-04-17 → 2027-04-24 (+7d) |
| CO-TE-MH-220 | Backfilling Works for Manholes of Telecom Network for Alignment-RD-02 | 2027-04-18 → 2027-04-25 (+7d) | 2027-04-20 → 2027-04-27 (+7d) |
| DD | **CCTV, Telephone, MSN, ACs System Works** | 2027-04-21 → 2027-04-28 (+7d) | 2027-04-27 → 2027-05-04 (+7d) |
| CO-TE-CTV-180 | Installation of CCTV, Telephone, ACS and MSN Systems Cables for Alignment-RD-02 | 2027-04-21 → 2027-04-28 (+7d) | 2027-04-27 → 2027-05-04 (+7d) |
| RD | **Road Works** | 2027-05-03 → 2027-05-10 (+7d) | 2027-06-07 → 2027-06-14 (+7d) |
| LS | **Pavement Works** | 2027-05-03 → 2027-05-10 (+7d) | 2027-05-24 → 2027-05-31 (+7d) |
| CO-RD-PV-200 | Fixing of Curbstone for Sidewalks Pavement for Alignment-RD-02 | 2027-05-03 → 2027-05-10 (+7d) | 2027-05-08 → 2027-05-20 (+12d) |
| CO-RD-PV-210 | Fixing of Interlock Tiles for Sidewalks Pavement for Alignment-RD-02 | 2027-05-09 → 2027-05-22 (+13d) | 2027-05-24 → 2027-05-31 (+7d) |
| TS | **Traffic Signs Boards and Roads Marking** | 2027-05-30 → 2027-06-06 (+7d) | 2027-06-07 → 2027-06-14 (+7d) |
| CO-RD-F-RM-200 | Application of Road Marking Works For Road Works for Alignment-RD-02 | 2027-05-30 → 2027-06-06 (+7d) | 2027-06-02 → 2027-06-09 (+7d) |
| CO-RD-F-TS-140 | Installation Works of Traffic Signs Boards For Road Works for Alignment-RD-02 | 2027-06-03 → 2027-06-10 (+7d) | 2027-06-07 → 2027-06-14 (+7d) |
| 3 | **Finishes for Infrastructure Networks** | 2027-04-11 → 2027-04-18 (+7d) | 2027-06-21 → 2027-06-28 (+7d) |
| 11 | **Storm Drainage Network** | 2027-05-12 → 2027-05-25 (+13d) | 2027-06-21 → 2027-06-28 (+7d) |
| TF | **Testing and Finishes** | 2027-05-12 → 2027-05-25 (+13d) | 2027-06-21 → 2027-06-28 (+7d) |
| CO-SD-ML-TF-120 | Testing Work for Pipes of Storm Drainage Network for Alignment-RD-02 | 2027-05-12 → 2027-05-25 (+13d) | 2027-05-24 → 2027-05-31 (+7d) |
| CO-SD-CB-TF-220 | Catch Basin Internal Finishes (Benching ) for Storm Drainage Network for Alignment-RD-02 | 2027-05-30 → 2027-06-06 (+7d) | 2027-06-05 → 2027-06-12 (+7d) |
| CO-SD-MH-TF-250 | Testing Works for Manholes of Storm Drainage Network for Alignment-RD-02 | 2027-05-30 → 2027-06-06 (+7d) | 2027-06-05 → 2027-06-12 (+7d) |

| ID | Task | Start | Finish |
| --- | --- | --- | --- |
| CO-SD-CB-TF-200 | Testing Works for Catch Basins of Storm Drainage Network for Alignment-RD-02 | 2027-06-06 → 2027-06-13 (+7d) | 2027-06-12 → 2027-06-19 (+7d) |
| CO-SD-CB-TF-210 | Install Catch Basin Cover Works for External Finishes of Storm Drainage Network for Alignment-RD-02 | 2027-06-13 → 2027-06-20 (+7d) | 2027-06-21 → 2027-06-28 (+7d) |
| 10 | **Sewage Network** | 2027-05-01 → 2027-05-08 (+7d) | 2027-05-26 → 2027-06-02 (+7d) |
| TF | **Testing and Finishes** | 2027-05-01 → 2027-05-08 (+7d) | 2027-05-26 → 2027-06-02 (+7d) |
| CO-SW-TF-270 | Final Testing For Main Line of Sewage Network for Alignment-RD-02 | 2027-05-01 → 2027-05-08 (+7d) | 2027-05-26 → 2027-06-02 (+7d) |
| CO-SW-TF-290 | Testing Works for Main Line Manholes of Sewage Network for Alignment-RD-02 | 2027-05-01 → 2027-05-08 (+7d) | 2027-05-26 → 2027-06-02 (+7d) |
| 9 | **Potable Water Network** | 2027-04-27 → 2027-05-04 (+7d) | 2027-06-06 → 2027-06-13 (+7d) |
| TF | **Testing and Finishes** | 2027-04-27 → 2027-05-04 (+7d) | 2027-06-06 → 2027-06-13 (+7d) |
| CO-PW-TF-170 | Fire Hydrant Finishies (S.Box + Safety + Marker Post ) of Potable Water Network for Alignment-RD-02 | 2027-04-27 → 2027-05-04 (+7d) | 2027-05-12 → 2027-05-25 (+13d) |
| CO-PW-TF-180 | Final Finishes works and Covers for Valves and Valve Chambers for Alignment-RD-02 | 2027-05-13 → 2027-05-26 (+13d) | 2027-05-27 → 2027-06-03 (+7d) |
| CO-PW-TF-160 | Testing of Potable Water Network for Alignment-RD-02 | 2027-05-29 → 2027-06-05 (+7d) | 2027-06-06 → 2027-06-13 (+7d) |
| 13 | **Irrigation Network** | 2027-05-09 → 2027-05-22 (+13d) | 2027-05-12 → 2027-05-25 (+13d) |
| TF | **Testing and Finishes** | 2027-05-09 → 2027-05-22 (+13d) | 2027-05-12 → 2027-05-25 (+13d) |
| CO-IR-TF-180 | Final Testing (pressure tests) of Irrigation Network for Alignment-RD-02 | 2027-05-09 → 2027-05-22 (+13d) | 2027-05-12 → 2027-05-25 (+13d) |
| 1 | **Treated Sewage Effluent (Tse)** | 2027-05-30 → 2027-06-06 (+7d) | 2027-06-05 → 2027-06-12 (+7d) |
| TF | **Testing and Finishes** | 2027-05-30 → 2027-06-06 (+7d) | 2027-06-05 → 2027-06-12 (+7d) |
| CO-TSE-TF-190 | Final Testing (pressure tests) of Treated Sewage Effluent (Tse) for Alignment-RD-02 | 2027-05-30 → 2027-06-06 (+7d) | 2027-06-05 → 2027-06-12 (+7d) |
| 14 | **Medium Voltage Network** | 2027-04-11 → 2027-04-18 (+7d) | 2027-04-17 → 2027-04-24 (+7d) |
| TT | **Termination and Testing Works** | 2027-04-11 → 2027-04-18 (+7d) | 2027-04-17 → 2027-04-24 (+7d) |
| CO-MV-TF-240 | Testing and Termination Works of Medium Voltage Network for Alignment-RD-02 | 2027-04-11 → 2027-04-18 (+7d) | 2027-04-17 → 2027-04-24 (+7d) |
| 6 | **Low Voltage Network** | 2027-05-02 → 2027-05-09 (+7d) | 2027-05-10 → 2027-05-23 (+13d) |
| TT | **Termination and Testing Works** | 2027-05-02 → 2027-05-09 (+7d) | 2027-05-10 → 2027-05-23 (+13d) |
| CON-LV-TT-150 | Testing and Termination Works for Distribution Pillars Units of Low Voltage Network for Alignment-RD-02 | 2027-05-02 → 2027-05-09 (+7d) | 2027-05-05 → 2027-05-12 (+7d) |
| CON-LV-TT-140 | Testing and Termination Works for Substation Low Voltage Panel Boards of Low Voltage Network for Alignment-RD-02 | 2027-05-06 → 2027-05-13 (+7d) | 2027-05-10 → 2027-05-23 (+13d) |
| 1 | **Earthing System Works** | 2027-05-06 → 2027-05-13 (+7d) | 2027-05-08 → 2027-05-20 (+12d) |
| CON-LV-ES-120 | Earthing System Works for Distribution Pillars Units of Low Voltage Network for Alignment-RD-02 | 2027-05-06 → 2027-05-13 (+7d) | 2027-05-08 → 2027-05-20 (+12d) |
| 12 | **Street Lighting Network** | 2027-05-04 → 2027-05-11 (+7d) | 2027-05-27 → 2027-06-03 (+7d) |
| TR | **Termination and Testing Works** | 2027-05-04 → 2027-05-11 (+7d) | 2027-05-27 → 2027-06-03 (+7d) |
| CO-SL-LP-420 | Installation Works for Lighting Fixtures With Drop Wire of Street Lighting Network for Alignment-RD-02 | 2027-05-04 → 2027-05-11 (+7d) | 2027-05-05 → 2027-05-12 (+7d) |
| CO-SL-TF-440 | Termination Works For Panel Board Cables of Street Lighting Network for Alignment-RD-02 | 2027-05-12 → 2027-05-25 (+13d) | 2027-05-24 → 2027-05-31 (+7d) |
| CO-SL-TF-450 | Testing Works for Lighting Poles of Street Lighting Network for Alignment-RD-02 | 2027-05-26 → 2027-06-02 (+7d) | 2027-05-27 → 2027-06-03 (+7d) |
| CO-SL-TF-460 | Testing Works For Panel Board Cables of Street Lighting Network for Alignment-RD-02 | 2027-05-26 → 2027-06-02 (+7d) | 2027-05-27 → 2027-06-03 (+7d) |
| ES | **Earthing System Works** | 2027-05-06 → 2027-05-13 (+7d) | 2027-05-25 → 2027-06-01 (+7d) |
| CO-SL-ES-260 | Install Earthing System Works for Lighting Poles of Street Lighting Network for Alignment-RD-02 | 2027-05-06 → 2027-05-13 (+7d) | 2027-05-12 → 2027-05-25 (+13d) |
| CO-SL-ES-270 | Install Earthing System Works for Lighting Panel Boards of Street Lighting Network for Alignment-RD-02 | 2027-05-13 → 2027-05-26 (+13d) | 2027-05-25 → 2027-06-01 (+7d) |
| 3 | **Telecom and Light Current Network** | 2027-05-06 → 2027-05-13 (+7d) | 2027-05-12 → 2027-05-25 (+13d) |
| 1 | **Testing and Finishes** | 2027-05-06 → 2027-05-13 (+7d) | 2027-05-12 → 2027-05-25 (+13d) |
| CO-TE-CTV-TF-220 | Testing and Interface modules with Telecom for Alignment-RD-02 | 2027-05-06 → 2027-05-13 (+7d) | 2027-05-09 → 2027-05-22 (+13d) |
| CO-TE-CTV-TF-350 | Testing and Interface modules with CCTV, Telephone, MSN and Access Control for Alignment-RD-02 | 2027-05-10 → 2027-05-23 (+13d) | 2027-05-12 → 2027-05-25 (+13d) |
| 3 | **Alignment-RD-03-1** | 2026-10-26 → 2026-11-02 (+7d) | 2027-05-22 → 2027-05-29 (+7d) |
| EW | **Earthworks** | 2026-10-26 → 2026-11-02 (+7d) | 2026-11-08 → 2026-11-15 (+7d) |
| EW | **Earthworks** | 2026-10-26 → 2026-11-02 (+7d) | 2026-11-08 → 2026-11-15 (+7d) |
| CO-EW-200 | Excavation and Backfilling Works Upto Design Level for Earthworks for Alignment-RD-03-1 | 2026-10-26 → 2026-11-02 (+7d) | 2026-11-08 → 2026-11-15 (+7d) |
| SD | **Storm Drainage Network** | 2026-11-09 → 2026-11-16 (+7d) | 2026-12-16 → 2026-12-23 (+7d) |
| MH | **Manholes** | 2026-11-09 → 2026-11-16 (+7d) | 2026-12-16 → 2026-12-23 (+7d) |
| CO-SD-MH-180 | Trench Excavation and Bedding Works for Manholes of Storm Drainage Network for Alignment-RD-03-1 | 2026-11-09 → 2026-11-16 (+7d) | 2026-11-19 → 2026-11-26 (+7d) |
| CO-SD-MH-190 | Install RC Footing Works for Manholes of Storm Drainage Network for Alignment-RD-03-1 | 2026-11-21 → 2026-11-28 (+7d) | 2026-11-23 → 2026-11-30 (+7d) |
| CO-SD-MH-200 | Install RC Wall Rings & Slab Works for Manholes of Storm Drainage Network for Alignment-RD-03-1 | 2026-11-24 → 2026-12-01 (+7d) | 2026-12-05 → 2026-12-12 (+7d) |
| CO-SD-MH-220 | Backfilling Works for Manholes of Storm Drainage Network for Alignment-RD-03-1 | 2026-12-06 → 2026-12-13 (+7d) | 2026-12-16 → 2026-12-23 (+7d) |
| ML | **Main Line Sections** | 2026-12-06 → 2026-12-13 (+7d) | 2026-12-16 → 2026-12-23 (+7d) |
| CO-SD-ML-100 | Trench Excavation and Bedding Works for Main Lines of Storm Drainage Network for Alignment-RD-03-1 | 2026-12-06 → 2026-12-13 (+7d) | 2026-12-08 → 2026-12-15 (+7d) |
| CO-SD-ML-120 | Pipes Laying Works for Main Lines of Storm Drainage Network for Alignment-RD-03-1 | 2026-12-09 → 2026-12-16 (+7d) | 2026-12-12 → 2026-12-19 (+7d) |
| CO-SD-ML-130 | Trench Backfilling and Compaction Works for Main Lines of Storm Drainage Network for Alignment-RD-03-1 | 2026-12-13 → 2026-12-20 (+7d) | 2026-12-16 → 2026-12-23 (+7d) |
| TSE | **Treated Sewage Effluent (Tse)** | 2026-12-24 → 2026-12-31 (+7d) | 2027-05-20 → 2027-05-27 (+7d) |
| CO-TSE-ML-150 | Trench Excavation and Bedding Works for Main Lines of Treated Sewage Effluent (Tse) for Alignment-RD-03-1 | 2026-12-24 → 2026-12-31 (+7d) | 2026-12-28 → 2027-01-04 (+7d) |
| CO-TSE-ML-160 | Pipes Laying Works for Main Lines of Treated Sewage Effluent (Tse) for Alignment-RD-03-1 | 2026-12-29 → 2027-01-05 (+7d) | 2027-01-02 → 2027-01-09 (+7d) |
| CO-TSE-ML-170 | Installation Works for Main Line Valves of Treated Sewage Effluent (Tse) for Alignment-RD-03-1 | 2027-01-03 → 2027-01-10 (+7d) | 2027-01-09 → 2027-01-16 (+7d) |
| CO-TSE-ML-190 | Installation Works for Valve and Washout Chambers of Treated Sewage Effluent (Tse) for Alignment-RD-03-1 | 2027-01-10 → 2027-01-17 (+7d) | 2027-01-16 → 2027-01-23 (+7d) |
| CO-TSE-ML-180 | Trench Backfilling and Compaction Works for Treated Sewage Effluent (Tse) for Alignment-RD-03-1 | 2027-01-17 → 2027-01-24 (+7d) | 2027-01-21 → 2027-01-28 (+7d) |
| TA | **Treated Sewage Effluent (Tse) Storage Tank** | 2027-05-09 → 2027-05-22 (+13d) | 2027-05-20 → 2027-05-27 (+7d) |
| CO-TSE-TF-180 | Installation of Storage Tank of Treated Sewage Effluent (Tse) for Alignment-RD-03-1 | 2027-05-09 → 2027-05-22 (+13d) | 2027-05-20 → 2027-05-27 (+7d) |
| PW | **Potable Water Network** | 2027-01-23 → 2027-01-30 (+7d) | 2027-05-08 → 2027-05-20 (+12d) |
| ML | **Main Line Sections** | 2027-01-23 → 2027-01-30 (+7d) | 2027-02-10 → 2027-02-17 (+7d) |
| CO-PW-ML-100 | Trench Excavation and Bedding Works for Main Lines of Potable Water Network for Alignment-RD-03-1 | 2027-01-23 → 2027-01-30 (+7d) | 2027-01-27 → 2027-02-03 (+7d) |
| CO-PW-ML-110 | Pipes Laying and accessories for Main Lines of Potable Water Network for Alignment-RD-03-1 | 2027-01-28 → 2027-02-04 (+7d) | 2027-02-02 → 2027-02-09 (+7d) |
| CO-PW-ML-130 | Trench Backfilling and Compaction Works for Main Lines of Potable Water Network for Alignment-RD-03-1 | 2027-02-03 → 2027-02-10 (+7d) | 2027-02-10 → 2027-02-17 (+7d) |
| VC | **Valve Chamber** | 2027-01-25 → 2027-02-01 (+7d) | 2027-02-13 → 2027-02-20 (+7d) |
| CO-PW-VC-170 | Excavation Works for Main Line Valves and Valve Chambers of Potable Water Network for Alignment-RD-03-1 | 2027-01-25 → 2027-02-01 (+7d) | 2027-01-27 → 2027-02-03 (+7d) |
| CO-PW-VC180 | Installation of Valve Chambers of Potable Water Network for Alignment-RD-03-1 | 2027-01-28 → 2027-02-04 (+7d) | 2027-01-31 → 2027-02-07 (+7d) |
| CO-PW-VC-190 | Installation Works for Valves of Potable Water Network for Alignment-RD-03-1 | 2027-02-07 → 2027-02-14 (+7d) | 2027-02-09 → 2027-02-16 (+7d) |

| ID | Task | Start | Finish |
| --- | --- | --- | --- |
| CO-PW-VC-220 | Backfilling Works for Main Line Valves and Valve Chambers of Potable Water Network for Alignment-RD-03-1 | 2027-02-10 → 2027-02-17 (+7d) | 2027-02-13 → 2027-02-20 (+7d) |
| FH | **Fire Hydrant** | 2027-01-28 → 2027-02-04 (+7d) | 2027-02-13 → 2027-02-20 (+7d) |
| CO-PW-FH-140 | Excavation Works for Fire Hydrants of Potable Water Network for Alignment-RD-03-1 | 2027-01-28 → 2027-02-04 (+7d) | 2027-01-30 → 2027-02-06 (+7d) |
| CO-PW-FH-150 | Installation Works for Fire Hydrant of Potable Water Network for Alignment-RD-03-1 | 2027-02-03 → 2027-02-10 (+7d) | 2027-02-04 → 2027-02-11 (+7d) |
| CO-PW-FH-160 | Trench Backfilling and Compaction Works for Fire Hydrants of Potable Water Network for Alignment-RD-03-1 | 2027-02-11 → 2027-02-18 (+7d) | 2027-02-13 → 2027-02-20 (+7d) |
| TA | **Potable Water Network Storage Tank** | 2027-05-02 → 2027-05-09 (+7d) | 2027-05-08 → 2027-05-20 (+12d) |
| CO-PW-TF-130 | Installation of Storage Tank of Potable Water Network for Alignment-RD-03-1 | 2027-05-02 → 2027-05-09 (+7d) | 2027-05-08 → 2027-05-20 (+12d) |
| LV | **Low Voltage Network** | 2027-02-11 → 2027-02-18 (+7d) | 2027-04-10 → 2027-04-17 (+7d) |
| MLVC | **Main Low Voltage Cables Works ( Cable 300 MM )** | 2027-02-11 → 2027-02-18 (+7d) | 2027-03-04 → 2027-03-15 (+11d) |
| CON-LV-ML-100 | Trench Excavation and Bedding Works for Main Cable of Low Voltage Network for Alignment-RD-03-1 | 2027-02-11 → 2027-02-18 (+7d) | 2027-02-20 → 2027-02-27 (+7d) |
| CON-LV-ML-110 | Cable Laying Works for Main Cable of Low Voltage Network for Alignment-RD-03-1 | 2027-02-21 → 2027-02-28 (+7d) | 2027-02-28 → 2027-03-07 (+7d) |
| CON-LV-ML-120 | Trench Backfilling and Compaction Works for Main Cable of Low Voltage Network for Alignment-RD-03-1 | 2027-03-01 → 2027-03-08 (+7d) | 2027-03-04 → 2027-03-15 (+11d) |
| SLVC | **Service Low Voltage Cables Works ( Cable 70 MM )** | 2027-02-21 → 2027-02-28 (+7d) | 2027-03-27 → 2027-04-03 (+7d) |
| CON-LV-HC-100 | Trench Excavation and Bedding Works for Service Cable of Low Voltage Network for Alignment-RD-03-1 | 2027-02-21 → 2027-02-28 (+7d) | 2027-02-24 → 2027-03-03 (+7d) |
| CON-LV-HC-110 | Cable Laying Works for Service Cable of Low Voltage Network for Alignment-RD-03-1 | 2027-03-16 → 2027-03-23 (+7d) | 2027-03-23 → 2027-03-30 (+7d) |
| CON-LV-HC-120 | Trench Backfilling and Compaction Works for Service Cable of Low Voltage Network for Alignment-RD-03-1 | 2027-03-24 → 2027-03-31 (+7d) | 2027-03-27 → 2027-04-03 (+7d) |
| DP | **Distribution Pillars Works** | 2027-03-28 → 2027-04-04 (+7d) | 2027-04-10 → 2027-04-17 (+7d) |
| CON-LV-DP-100 | Foundation Excavation Works for Distribution Pillars of Low Voltage Network for Alignment-RD-03-1 | 2027-03-28 → 2027-04-04 (+7d) | 2027-03-31 → 2027-04-07 (+7d) |
| CON-LV-DP-110 | Pouring Plain Concrete For Distribution Pillar Units of Low Voltage Network for Alignment-RD-03-1 | 2027-04-01 → 2027-04-08 (+7d) | 2027-04-05 → 2027-04-12 (+7d) |
| CON-LV-DP-120 | Installation Works for Distribution Pillar Units of Low Voltage Network for Alignment-RD-03-1 | 2027-04-06 → 2027-04-13 (+7d) | 2027-04-10 → 2027-04-17 (+7d) |
| SL | **Street Lighting Network** | 2027-03-16 → 2027-03-23 (+7d) | 2027-04-07 → 2027-04-14 (+7d) |
| LP | **Lighting Poles Works** | 2027-03-16 → 2027-03-23 (+7d) | 2027-04-03 → 2027-04-10 (+7d) |
| CO-SL-LP-550 | Installation Works for Lighting Poles Foundation of Street Lighting Network for Alignment-RD-03-1 | 2027-03-16 → 2027-03-23 (+7d) | 2027-03-21 → 2027-03-28 (+7d) |
| CO-SL-LP-560 | Installation Works for Lighting Poles of Street Lighting Network for Alignment-RD-03-1 | 2027-03-22 → 2027-03-29 (+7d) | 2027-03-27 → 2027-04-03 (+7d) |
| CO-SL-LP-570 | Backfilling Works for Lighting Poles of Street Lighting Network for Alignment-RD-03-1 | 2027-03-28 → 2027-04-04 (+7d) | 2027-04-03 → 2027-04-10 (+7d) |
| CW | **Cabling Works** | 2027-03-28 → 2027-04-04 (+7d) | 2027-04-07 → 2027-04-14 (+7d) |
| CO-SL-CL-410 | Cable Laying Works for Street Lighting Network for Alignment-RD-03-1 | 2027-03-28 → 2027-04-04 (+7d) | 2027-04-01 → 2027-04-08 (+7d) |
| CO-SL-CL-420 | Trench Backfilling and Compaction Works for Street Lighting Network for Alignment-RD-03-1 | 2027-04-03 → 2027-04-10 (+7d) | 2027-04-07 → 2027-04-14 (+7d) |
| TE | **Telecom and Light Current Network** | 2027-04-04 → 2027-04-11 (+7d) | 2027-04-17 → 2027-04-24 (+7d) |
| PD | **Ducts Works** | 2027-04-08 → 2027-04-15 (+7d) | 2027-04-17 → 2027-04-24 (+7d) |
| CO-TE-DW-110 | Pipes Laying Works for Ducts of Telecom Network for Alignment-RD-03-1 | 2027-04-08 → 2027-04-15 (+7d) | 2027-04-12 → 2027-04-19 (+7d) |
| CO-TE-DW-130 | Trench Backfilling and Compaction Works for Ducts of Telecom Network for Alignment-RD-03-1 | 2027-04-13 → 2027-04-20 (+7d) | 2027-04-17 → 2027-04-24 (+7d) |
| MH | **Manholes Works** | 2027-04-04 → 2027-04-11 (+7d) | 2027-04-10 → 2027-04-17 (+7d) |
| CO-TE-MH-140 | Excavation Works for Manholes of Telecom Network for Alignment-RD-03-1 | 2027-04-04 → 2027-04-11 (+7d) | 2027-04-05 → 2027-04-12 (+7d) |
| CO-TE-MH-150 | Installation Works for Manholes of Telecom Network for Alignment-RD-03-1 | 2027-04-06 → 2027-04-13 (+7d) | 2027-04-07 → 2027-04-14 (+7d) |
| CO-TE-MH-160 | Backfilling Works for Manholes of Telecom Network for Alignment-RD-03-1 | 2027-04-08 → 2027-04-15 (+7d) | 2027-04-10 → 2027-04-17 (+7d) |
| DD | **CCTV, Telephone, MSN, ACs System Works** | 2027-04-11 → 2027-04-18 (+7d) | 2027-04-14 → 2027-04-21 (+7d) |
| CO-TE-CTV-110 | Installation of CCTV, Telephone, ACS and MSN Systems Cables for Alignment-RD-03-1 | 2027-04-11 → 2027-04-18 (+7d) | 2027-04-14 → 2027-04-21 (+7d) |
| RD | **Road Works** | 2027-04-18 → 2027-04-25 (+7d) | 2027-05-12 → 2027-05-25 (+13d) |
| RD | **Pre-Bituminous Construction** | 2027-04-18 → 2027-04-25 (+7d) | 2027-05-03 → 2027-05-10 (+7d) |
| CO-RD-PB-140 | Subgrade Layer for Road Works for Alignment-RD-03-1 | 2027-04-18 → 2027-04-25 (+7d) | 2027-04-25 → 2027-05-02 (+7d) |
| CO-RD-PB-150 | Aggregate Base Course Layer for Road Works for Alignment-RD-03-1 | 2027-04-26 → 2027-05-03 (+7d) | 2027-05-03 → 2027-05-10 (+7d) |
| 1 | **Bituminous Construction** | 2027-04-26 → 2027-05-03 (+7d) | 2027-05-03 → 2027-05-10 (+7d) |
| CO-RD-B-160 | Bituminous Base Courses Layers for Road Works for Alignment-RD-03-1 | 2027-04-26 → 2027-05-03 (+7d) | 2027-04-27 → 2027-05-04 (+7d) |
| CON-RD-MR-150 | Preparation of Asphaltic Wearing Course Layer for Roads Network for Alignment-RD-03-1 | 2027-05-02 → 2027-05-09 (+7d) | 2027-05-03 → 2027-05-10 (+7d) |
| LS | **Pavement Works** | 2027-04-28 → 2027-05-05 (+7d) | 2027-05-12 → 2027-05-25 (+13d) |
| CO-RD-PV-160 | Fixing of Curbstone for Sidewalks Pavement for Alignment-RD-03-1 | 2027-04-28 → 2027-05-05 (+7d) | 2027-05-03 → 2027-05-10 (+7d) |
| CO-RD-PV-170 | Fixing of Interlock Tiles for Sidewalks Pavement for Alignment-RD-03-1 | 2027-05-04 → 2027-05-11 (+7d) | 2027-05-12 → 2027-05-25 (+13d) |
| TS | **Traffic Signs Boards and Roads Marking** | 2027-05-04 → 2027-05-11 (+7d) | 2027-05-08 → 2027-05-20 (+12d) |
| CO-RD-F-RM-180 | Application of Road Marking Works For Road Works for Alignment-RD-03-1 | 2027-05-04 → 2027-05-11 (+7d) | 2027-05-05 → 2027-05-12 (+7d) |
| CO-RD-F-TS-120 | Installation Works of Traffic Signs Boards For Road Works for Alignment-RD-03-1 | 2027-05-06 → 2027-05-13 (+7d) | 2027-05-08 → 2027-05-20 (+12d) |
| 3 | **Finishes for Infrastructure Networks** | 2027-04-11 → 2027-04-18 (+7d) | 2027-05-22 → 2027-05-29 (+7d) |
| 11 | **Storm Drainage Network** | 2027-05-01 → 2027-05-08 (+7d) | 2027-05-06 → 2027-05-13 (+7d) |
| TF | **Testing and Finishes** | 2027-05-01 → 2027-05-08 (+7d) | 2027-05-06 → 2027-05-13 (+7d) |
| CO-SD-ML-TF-100 | Testing Work for Pipes of Storm Drainage Network for Alignment-RD-03-1 | 2027-05-01 → 2027-05-08 (+7d) | 2027-05-03 → 2027-05-10 (+7d) |
| CO-SD-MH-TF-210 | Testing Works for Manholes of Storm Drainage Network for Alignment-RD-03-1 | 2027-05-04 → 2027-05-11 (+7d) | 2027-05-06 → 2027-05-13 (+7d) |
| 9 | **Potable Water Network** | 2027-04-27 → 2027-05-04 (+7d) | 2027-05-01 → 2027-05-08 (+7d) |
| TF | **Testing and Finishes** | 2027-04-27 → 2027-05-04 (+7d) | 2027-05-01 → 2027-05-08 (+7d) |
| CO-PW-TF-100 | Final Finishes works and Covers for Valves and Valve Chambers for Alignment-RD-03-1 | 2027-04-27 → 2027-05-04 (+7d) | 2027-05-01 → 2027-05-08 (+7d) |
| CO-PW-TF-110 | Testing of Potable Water Network for Alignment-RD-03-1 | 2027-04-27 → 2027-05-04 (+7d) | 2027-04-28 → 2027-05-05 (+7d) |
| CO-PW-TF-120 | Fire Hydrant Finishies (S.Box + Safety + Marker Post ) of Potable Water Network for Alignment-RD-03-1 | 2027-04-27 → 2027-05-04 (+7d) | 2027-04-29 → 2027-05-06 (+7d) |
| 1 | **Treated Sewage Effluent (Tse)** | 2027-05-22 → 2027-05-29 (+7d) | 2027-05-22 → 2027-05-29 (+7d) |
| TF | **Testing and Finishes** | 2027-05-22 → 2027-05-29 (+7d) | 2027-05-22 → 2027-05-29 (+7d) |
| CO-TSE-TF-170 | Final Testing (pressure tests) of Treated Sewage Effluent (Tse) for Alignment-RD-03-1 | 2027-05-22 → 2027-05-29 (+7d) | 2027-05-22 → 2027-05-29 (+7d) |
| 6 | **Low Voltage Network** | 2027-04-11 → 2027-04-18 (+7d) | 2027-04-14 → 2027-04-21 (+7d) |
| TT | **Termination and Testing Works** | 2027-04-11 → 2027-04-18 (+7d) | 2027-04-14 → 2027-04-21 (+7d) |
| CON-LV-TT-110 | Testing and Termination Works for Distribution Pillars Units of Low Voltage Network for Alignment-RD-03-1 | 2027-04-11 → 2027-04-18 (+7d) | 2027-04-12 → 2027-04-19 (+7d) |
| CON-LV-TT-100 | Testing and Termination Works for Substation Low Voltage Panel Boards of Low Voltage Network for Alignment-RD-03-1 | 2027-04-13 → 2027-04-20 (+7d) | 2027-04-14 → 2027-04-21 (+7d) |
| 1 | **Earthing System Works** | 2027-04-13 → 2027-04-20 (+7d) | 2027-04-14 → 2027-04-21 (+7d) |
| CON-LV-ES-100 | Earthing System Works for Distribution Pillars Units of Low Voltage Network for Alignment-RD-03-1 | 2027-04-13 → 2027-04-20 (+7d) | 2027-04-14 → 2027-04-21 (+7d) |

| ID | Task | Start | Finish |
| --- | --- | --- | --- |
| 12 | **Street Lighting Network** | 2027-04-20 → 2027-04-27 (+7d) | 2027-05-09 → 2027-05-22 (+13d) |
| TR | **Termination and Testing Works** | 2027-04-20 → 2027-04-27 (+7d) | 2027-05-09 → 2027-05-22 (+13d) |
| CO-SL-LP-580 | Installation Works for Lighting Fixtures With Drop Wire of Street Lighting Network for Alignment-RD-03-1 | 2027-04-20 → 2027-04-27 (+7d) | 2027-04-26 → 2027-05-03 (+7d) |
| CO-SL-TF-570 | Testing Works for Lighting Poles of Street Lighting Network for Alignment-RD-03-1 | 2027-05-03 → 2027-05-10 (+7d) | 2027-05-09 → 2027-05-22 (+13d) |
| ES | **Earthing System Works** | 2027-04-27 → 2027-05-04 (+7d) | 2027-05-02 → 2027-05-09 (+7d) |
| CO-SL-ES-320 | Install Earthing System Works for Lighting Poles of Street Lighting Network for Alignment-RD-03-1 | 2027-04-27 → 2027-05-04 (+7d) | 2027-04-29 → 2027-05-06 (+7d) |
| CO-SL-ES-330 | Install Earthing System Works for Lighting Panel Boards of Street Lighting Network for Alignment-RD-03-1 | 2027-05-01 → 2027-05-08 (+7d) | 2027-05-02 → 2027-05-09 (+7d) |
| 3 | **Telecom and Light Current Network** | 2027-04-15 → 2027-04-22 (+7d) | 2027-04-21 → 2027-04-28 (+7d) |
| 1 | **Testing and Finishes** | 2027-04-15 → 2027-04-22 (+7d) | 2027-04-21 → 2027-04-28 (+7d) |
| CO-TE-CTV-TF-140 | Testing and Interface modules with Telecom for Alignment-RD-03-1 | 2027-04-15 → 2027-04-22 (+7d) | 2027-04-21 → 2027-04-28 (+7d) |
| CO-TE-CTV-TF-330 | Testing and Interface modules with CCTV, Telephone, MSN and Access Control for Alignment-RD-03-1 | 2027-04-15 → 2027-04-22 (+7d) | 2027-04-21 → 2027-04-28 (+7d) |
| 2 | **Alignment-RD-03-2** | 2026-10-28 → 2026-11-04 (+7d) | 2027-06-17 → 2027-06-24 (+7d) |
| EW | **Earthworks** | 2026-10-28 → 2026-11-04 (+7d) | 2026-11-10 → 2026-11-17 (+7d) |
| EW | **Earthworks** | 2026-10-28 → 2026-11-04 (+7d) | 2026-11-10 → 2026-11-17 (+7d) |
| CO-EW-240 | Excavation and Backfilling Works Upto Design Level for Earthworks for Alignment-RD-03-2 | 2026-10-28 → 2026-11-04 (+7d) | 2026-11-10 → 2026-11-17 (+7d) |
| SD | **Storm Drainage Network** | 2026-12-17 → 2026-12-24 (+7d) | 2027-02-09 → 2027-02-16 (+7d) |
| MH | **Manholes** | 2026-12-17 → 2026-12-24 (+7d) | 2027-01-27 → 2027-02-03 (+7d) |
| CO-SD-MH-350 | Trench Excavation and Bedding Works for Manholes of Storm Drainage Network for Alignment-RD-03-2 | 2026-12-17 → 2026-12-24 (+7d) | 2026-12-28 → 2027-01-04 (+7d) |
| CO-SD-MH-360 | Install RC Footing Works for Manholes of Storm Drainage Network for Alignment-RD-03-2 | 2026-12-29 → 2027-01-05 (+7d) | 2027-01-07 → 2027-01-14 (+7d) |
| CO-SD-MH-370 | Install RC Wall Rings & Slab Works for Manholes of Storm Drainage Network for Alignment-RD-03-2 | 2027-01-09 → 2027-01-16 (+7d) | 2027-01-19 → 2027-01-26 (+7d) |
| CO-SD-MH-380 | Backfilling Works for Manholes of Storm Drainage Network for Alignment-RD-03-2 | 2027-01-20 → 2027-01-27 (+7d) | 2027-01-27 → 2027-02-03 (+7d) |
| ML | **Main Line Sections** | 2027-01-20 → 2027-01-27 (+7d) | 2027-02-09 → 2027-02-16 (+7d) |
| CO-SD-ML-230 | Trench Excavation and Bedding Works for Main Lines of Storm Drainage Network for Alignment-RD-03-2 | 2027-01-20 → 2027-01-27 (+7d) | 2027-01-27 → 2027-02-03 (+7d) |
| CO-SD-ML-240 | Pipes Laying Works for Main Lines of Storm Drainage Network for Alignment-RD-03-2 | 2027-01-28 → 2027-02-04 (+7d) | 2027-02-02 → 2027-02-09 (+7d) |
| CO-SD-ML-250 | Trench Backfilling and Compaction Works for Main Lines of Storm Drainage Network for Alignment-RD-03-2 | 2027-02-03 → 2027-02-10 (+7d) | 2027-02-09 → 2027-02-16 (+7d) |
| MV | **Medium Voltage Network** | 2027-03-07 → 2027-03-17 (+10d) | 2027-03-28 → 2027-04-04 (+7d) |
| CW | **Cabling Works** | 2027-03-07 → 2027-03-17 (+10d) | 2027-03-28 → 2027-04-04 (+7d) |
| CO-MV-ML-370 | Trench Excavation and Bedding Works for Medium Voltage Network for Alignment-RD-03-2 | 2027-03-07 → 2027-03-17 (+10d) | 2027-03-15 → 2027-03-22 (+7d) |
| CO-MV-ML-380 | Duct Laying Works for Medium Voltage Network for Alignment-RD-03-2 | 2027-03-17 → 2027-03-24 (+7d) | 2027-03-22 → 2027-03-29 (+7d) |
| CO-MV-ML-390 | Trench Backfilling and Compaction Works for Medium Voltage Network for Alignment-RD-03-2 | 2027-03-24 → 2027-03-31 (+7d) | 2027-03-28 → 2027-04-04 (+7d) |
| LV | **Low Voltage Network** | 2027-03-31 → 2027-04-07 (+7d) | 2027-05-04 → 2027-05-11 (+7d) |
| MLVC | **Main Low Voltage Cables Works ( Cable 300 MM )** | 2027-03-31 → 2027-04-07 (+7d) | 2027-04-24 → 2027-05-01 (+7d) |
| CON-LV-ML-220 | Trench Excavation and Bedding Works for Main Cable of Low Voltage Network for Alignment-RD-03-2 | 2027-03-31 → 2027-04-07 (+7d) | 2027-04-06 → 2027-04-13 (+7d) |
| CON-LV-ML-230 | Cable Laying Works for Main Cable of Low Voltage Network for Alignment-RD-03-2 | 2027-04-07 → 2027-04-14 (+7d) | 2027-04-17 → 2027-04-24 (+7d) |
| CON-LV-ML-240 | Trench Backfilling and Compaction Works for Main Cable of Low Voltage Network for Alignment-RD-03-2 | 2027-04-18 → 2027-04-25 (+7d) | 2027-04-24 → 2027-05-01 (+7d) |
| SLVC | **Service Low Voltage Cables Works ( Cable 70 MM )** | 2027-04-07 → 2027-04-14 (+7d) | 2027-05-04 → 2027-05-11 (+7d) |
| CON-LV-HC-220 | Trench Excavation and Bedding Works for Service Cable of Low Voltage Network for Alignment-RD-03-2 | 2027-04-07 → 2027-04-14 (+7d) | 2027-04-12 → 2027-04-19 (+7d) |
| CON-LV-HC-230 | Cable Laying Works for Service Cable of Low Voltage Network for Alignment-RD-03-2 | 2027-04-18 → 2027-04-25 (+7d) | 2027-04-27 → 2027-05-04 (+7d) |
| CON-LV-HC-240 | Trench Backfilling and Compaction Works for Service Cable of Low Voltage Network for Alignment-RD-03-2 | 2027-04-28 → 2027-05-05 (+7d) | 2027-05-04 → 2027-05-11 (+7d) |
| DP | **Distribution Pillars Works** | 2027-04-08 → 2027-04-15 (+7d) | 2027-04-20 → 2027-04-27 (+7d) |
| CON-LV-DP-220 | Foundation Excavation Works for Distribution Pillars of Low Voltage Network for Alignment-RD-03-2 | 2027-04-08 → 2027-04-15 (+7d) | 2027-04-15 → 2027-04-22 (+7d) |
| CON-LV-DP-230 | Pouring Plain Concrete For Distribution Pillar Units of Low Voltage Network for Alignment-RD-03-2 | 2027-04-17 → 2027-04-24 (+7d) | 2027-04-18 → 2027-04-25 (+7d) |
| CON-LV-DP-240 | Installation Works for Distribution Pillar Units of Low Voltage Network for Alignment-RD-03-2 | 2027-04-19 → 2027-04-26 (+7d) | 2027-04-20 → 2027-04-27 (+7d) |
| SL | **Street Lighting Network** | 2027-03-16 → 2027-03-23 (+7d) | 2027-04-08 → 2027-04-15 (+7d) |
| LP | **Lighting Poles Works** | 2027-03-16 → 2027-03-23 (+7d) | 2027-04-03 → 2027-04-10 (+7d) |
| CO-SL-LP-500 | Installation Works for Lighting Poles Foundation of Street Lighting Network for Alignment-RD-03-2 | 2027-03-16 → 2027-03-23 (+7d) | 2027-03-21 → 2027-03-28 (+7d) |
| CO-SL-LP-510 | Installation Works for Lighting Poles of Street Lighting Network for Alignment-RD-03-2 | 2027-03-22 → 2027-03-29 (+7d) | 2027-03-27 → 2027-04-03 (+7d) |
| CO-SL-LP-520 | Backfilling Works for Lighting Poles of Street Lighting Network for Alignment-RD-03-2 | 2027-03-28 → 2027-04-04 (+7d) | 2027-04-03 → 2027-04-10 (+7d) |
| CW | **Cabling Works** | 2027-03-29 → 2027-04-05 (+7d) | 2027-04-08 → 2027-04-15 (+7d) |
| CO-SL-CL-380 | Cable Laying Works for Street Lighting Network for Alignment-RD-03-2 | 2027-03-29 → 2027-04-05 (+7d) | 2027-04-03 → 2027-04-10 (+7d) |
| CO-SL-CL-390 | Trench Backfilling and Compaction Works for Street Lighting Network for Alignment-RD-03-2 | 2027-04-04 → 2027-04-11 (+7d) | 2027-04-08 → 2027-04-15 (+7d) |
| TE | **Telecom and Light Current Network** | 2027-05-05 → 2027-05-12 (+7d) | 2027-05-08 → 2027-05-20 (+12d) |
| DD | **CCTV, Telephone, MSN, ACs System Works** | 2027-05-05 → 2027-05-12 (+7d) | 2027-05-08 → 2027-05-20 (+12d) |
| CO-TE-CTV-240 | Installation of CCTV, Telephone, ACS and MSN Systems Cables for Alignment-RD-03-2 | 2027-05-05 → 2027-05-12 (+7d) | 2027-05-08 → 2027-05-20 (+12d) |
| RD | **Road Works** | 2027-05-05 → 2027-05-12 (+7d) | 2027-06-17 → 2027-06-24 (+7d) |
| RD | **Pre-Bituminous Construction** | 2027-05-05 → 2027-05-12 (+7d) | 2027-05-22 → 2027-05-29 (+7d) |
| CO-RD-PB-220 | Subgrade Layer for Road Works for Alignment-RD-03-2 | 2027-05-05 → 2027-05-12 (+7d) | 2027-05-10 → 2027-05-23 (+13d) |
| CO-RD-PB-230 | Installation of Aggregate Base Course Layer and Interlock Works for Road Works for Alignment-RD-03-2 | 2027-05-11 → 2027-05-24 (+13d) | 2027-05-22 → 2027-05-29 (+7d) |
| 1 | **Bituminous Construction** | 2027-05-23 → 2027-05-30 (+7d) | 2027-06-08 → 2027-06-15 (+7d) |
| CO-RD-B-240 | Bituminous Base Courses Layers for Road Works for Alignment-RD-03-2 | 2027-05-23 → 2027-05-30 (+7d) | 2027-05-25 → 2027-06-01 (+7d) |
| CON-RD-MR-230 | Preparation of Asphaltic Wearing Course Layer for Roads Network for Alignment-RD-03-2 | 2027-06-06 → 2027-06-13 (+7d) | 2027-06-08 → 2027-06-15 (+7d) |
| LS | **Pavement Works** | 2027-05-26 → 2027-06-02 (+7d) | 2027-06-10 → 2027-06-17 (+7d) |
| CO-RD-PV-240 | Fixing of Curbstone for Sidewalks Pavement for Alignment-RD-03-2 | 2027-05-26 → 2027-06-02 (+7d) | 2027-06-02 → 2027-06-09 (+7d) |
| CO-RD-PV-250 | Fixing of Interlock Tiles for Sidewalks Pavement for Alignment-RD-03-2 | 2027-06-03 → 2027-06-10 (+7d) | 2027-06-10 → 2027-06-17 (+7d) |
| TS | **Traffic Signs Boards and Roads Marking** | 2027-06-12 → 2027-06-19 (+7d) | 2027-06-17 → 2027-06-24 (+7d) |
| CO-RD-F-RM-220 | Application of Road Marking Works For Road Works for Alignment-RD-03-2 | 2027-06-12 → 2027-06-19 (+7d) | 2027-06-14 → 2027-06-21 (+7d) |
| CO-RD-F-TS-160 | Installation Works of Traffic Signs Boards For Road Works for Alignment-RD-03-2 | 2027-06-15 → 2027-06-22 (+7d) | 2027-06-17 → 2027-06-24 (+7d) |
| 3 | **Finishes for Infrastructure Networks** | 2027-03-29 → 2027-04-05 (+7d) | 2027-06-05 → 2027-06-12 (+7d) |
| 11 | **Storm Drainage Network** | 2027-05-12 → 2027-05-25 (+13d) | 2027-06-05 → 2027-06-12 (+7d) |
| TF | **Testing and Finishes** | 2027-05-12 → 2027-05-25 (+13d) | 2027-06-05 → 2027-06-12 (+7d) |

| ID | Task | Start | Finish |
| --- | --- | --- | --- |
| CO-SD-MH-TF-290 | Testing Works for Manholes of Storm Drainage Network for Alignment-RD-03-2 | 2027-05-12 → 2027-05-25 (+13d) | 2027-05-24 → 2027-05-31 (+7d) |
| CO-SD-CB-TF-260 | Testing Works for Catch Basins of Storm Drainage Network for Alignment-RD-03-2 | 2027-05-26 → 2027-06-02 (+7d) | 2027-06-05 → 2027-06-12 (+7d) |
| 14 | **Medium Voltage Network** | 2027-03-29 → 2027-04-05 (+7d) | 2027-04-04 → 2027-04-11 (+7d) |
| TT | **Termination and Testing Works** | 2027-03-29 → 2027-04-05 (+7d) | 2027-04-04 → 2027-04-11 (+7d) |
| CO-MV-TF-260 | Testing and Termination Works of Medium Voltage Network for Alignment-RD-03-2 | 2027-03-29 → 2027-04-05 (+7d) | 2027-04-04 → 2027-04-11 (+7d) |
| 6 | **Low Voltage Network** | 2027-04-21 → 2027-04-28 (+7d) | 2027-05-12 → 2027-05-25 (+13d) |
| TT | **Termination and Testing Works** | 2027-04-21 → 2027-04-28 (+7d) | 2027-05-12 → 2027-05-25 (+13d) |
| CON-LV-TT-190 | Testing and Termination Works for Distribution Pillars Units of Low Voltage Network for Alignment-RD-03-2 | 2027-04-21 → 2027-04-28 (+7d) | 2027-04-27 → 2027-05-04 (+7d) |
| CON-LV-TT-180 | Testing and Termination Works for Substation Low Voltage Panel Boards of Low Voltage Network for Alignment-RD-03-2 | 2027-05-05 → 2027-05-12 (+7d) | 2027-05-12 → 2027-05-25 (+13d) |
| 1 | **Earthing System Works** | 2027-04-28 → 2027-05-05 (+7d) | 2027-04-29 → 2027-05-06 (+7d) |
| CON-LV-ES-140 | Earthing System Works for Distribution Pillars Units of Low Voltage Network for Alignment-RD-03-2 | 2027-04-28 → 2027-05-05 (+7d) | 2027-04-29 → 2027-05-06 (+7d) |
| 12 | **Street Lighting Network** | 2027-04-13 → 2027-04-20 (+7d) | 2027-04-29 → 2027-05-06 (+7d) |
| TR | **Termination and Testing Works** | 2027-04-13 → 2027-04-20 (+7d) | 2027-04-29 → 2027-05-06 (+7d) |
| CO-SL-LP-530 | Installation Works for Lighting Fixtures With Drop Wire of Street Lighting Network for Alignment-RD-03-2 | 2027-04-13 → 2027-04-20 (+7d) | 2027-04-19 → 2027-04-26 (+7d) |
| CO-SL-TF-530 | Testing Works for Lighting Poles of Street Lighting Network for Alignment-RD-03-2 | 2027-04-24 → 2027-05-01 (+7d) | 2027-04-29 → 2027-05-06 (+7d) |
| ES | **Earthing System Works** | 2027-04-24 → 2027-05-01 (+7d) | 2027-04-28 → 2027-05-05 (+7d) |
| CO-SL-ES-300 | Install Earthing System Works for Lighting Poles of Street Lighting Network for Alignment-RD-03-2 | 2027-04-24 → 2027-05-01 (+7d) | 2027-04-26 → 2027-05-03 (+7d) |
| CO-SL-ES-310 | Install Earthing System Works for Lighting Panel Boards of Street Lighting Network for Alignment-RD-03-2 | 2027-04-27 → 2027-05-04 (+7d) | 2027-04-28 → 2027-05-05 (+7d) |
| 3 | **Telecom and Light Current Network** | 2027-05-09 → 2027-05-22 (+13d) | 2027-05-12 → 2027-05-25 (+13d) |
| 1 | **Testing and Finishes** | 2027-05-09 → 2027-05-22 (+13d) | 2027-05-12 → 2027-05-25 (+13d) |
| CO-TE-CTV-TF-320 | Testing and Interface modules with CCTV, Telephone, MSN and Access Control for Alignment-RD-03-2 | 2027-05-09 → 2027-05-22 (+13d) | 2027-05-12 → 2027-05-25 (+13d) |
| 4 | **Alignment-RD-03-3** | 2026-11-09 → 2026-11-16 (+7d) | 2027-05-29 → 2027-06-05 (+7d) |
| EW | **Earthworks** | 2026-11-09 → 2026-11-16 (+7d) | 2026-11-21 → 2026-11-28 (+7d) |
| EW | **Earthworks** | 2026-11-09 → 2026-11-16 (+7d) | 2026-11-21 → 2026-11-28 (+7d) |
| CO-EW-230 | Excavation and Backfilling Works Upto Design Level for Earthworks for Alignment-RD-03-3 | 2026-11-09 → 2026-11-16 (+7d) | 2026-11-21 → 2026-11-28 (+7d) |
| SD | **Storm Drainage Network** | 2026-12-09 → 2026-12-16 (+7d) | 2026-12-20 → 2026-12-27 (+7d) |
| ML | **Main Line Sections** | 2026-12-09 → 2026-12-16 (+7d) | 2026-12-20 → 2026-12-27 (+7d) |
| CO-SD-ML-200 | Trench Excavation and Bedding Works for Main Lines of Storm Drainage Network for Alignment-RD-03-3 | 2026-12-09 → 2026-12-16 (+7d) | 2026-12-12 → 2026-12-19 (+7d) |
| CO-SD-ML-210 | Pipes Laying Works for Main Lines of Storm Drainage Network for Alignment-RD-03-3 | 2026-12-13 → 2026-12-20 (+7d) | 2026-12-15 → 2026-12-22 (+7d) |
| CO-SD-ML-220 | Trench Backfilling and Compaction Works for Main Lines of Storm Drainage Network for Alignment-RD-03-3 | 2026-12-17 → 2026-12-24 (+7d) | 2026-12-20 → 2026-12-27 (+7d) |
| TSE | **Treated Sewage Effluent (Tse)** | 2026-12-21 → 2026-12-28 (+7d) | 2027-01-27 → 2027-02-03 (+7d) |
| CO-TSE-ML-300 | Trench Excavation and Bedding Works for Main Lines of Treated Sewage Effluent (Tse) for Alignment-RD-03-3 | 2026-12-21 → 2026-12-28 (+7d) | 2027-01-02 → 2027-01-09 (+7d) |
| CO-TSE-ML-310 | Pipes Laying Works for Main Lines of Treated Sewage Effluent (Tse) for Alignment-RD-03-3 | 2027-01-03 → 2027-01-10 (+7d) | 2027-01-14 → 2027-01-21 (+7d) |
| CO-TSE-ML-330 | Trench Backfilling and Compaction Works for Treated Sewage Effluent (Tse) for Alignment-RD-03-3 | 2027-01-16 → 2027-01-23 (+7d) | 2027-01-27 → 2027-02-03 (+7d) |
| PW | **Potable Water Network** | 2027-01-28 → 2027-02-04 (+7d) | 2027-03-06 → 2027-03-16 (+10d) |
| ML | **Main Line Sections** | 2027-01-28 → 2027-02-04 (+7d) | 2027-03-03 → 2027-03-14 (+11d) |
| CO-PW-ML-200 | Trench Excavation and Bedding Works for Main Lines of Potable Water Network for Alignment-RD-03-3 | 2027-01-28 → 2027-02-04 (+7d) | 2027-02-08 → 2027-02-15 (+7d) |
| CO-PW-ML-210 | Pipes Laying and accessories for Main Lines of Potable Water Network for Alignment-RD-03-3 | 2027-02-09 → 2027-02-16 (+7d) | 2027-02-20 → 2027-02-27 (+7d) |
| CO-PW-ML-220 | Trench Backfilling and Compaction Works for Main Lines of Potable Water Network for Alignment-RD-03-3 | 2027-02-21 → 2027-02-28 (+7d) | 2027-03-03 → 2027-03-14 (+11d) |
| VC | **Valve Chamber** | 2027-01-28 → 2027-02-04 (+7d) | 2027-03-06 → 2027-03-16 (+10d) |
| CO-PW-VC-290 | Excavation Works for Main Line Valves and Valve Chambers of Potable Water Network for Alignment-RD-03-3 | 2027-01-28 → 2027-02-04 (+7d) | 2027-02-08 → 2027-02-15 (+7d) |
| CO-PW-VC210 | Installation of Valve Chambers of Potable Water Network for Alignment-RD-03-3 | 2027-02-09 → 2027-02-16 (+7d) | 2027-02-20 → 2027-02-27 (+7d) |
| CO-PW-VC-300 | Installation Works for Valves of Potable Water Network for Alignment-RD-03-3 | 2027-02-21 → 2027-02-28 (+7d) | 2027-03-02 → 2027-03-13 (+11d) |
| CO-PW-VC-310 | Backfilling Works for Main Line Valves and Valve Chambers of Potable Water Network for Alignment-RD-03-3 | 2027-03-03 → 2027-03-14 (+11d) | 2027-03-06 → 2027-03-16 (+10d) |
| FH | **Fire Hydrant** | 2027-02-09 → 2027-02-16 (+7d) | 2027-03-06 → 2027-03-16 (+10d) |
| CO-PW-FH-230 | Excavation Works for Fire Hydrants of Potable Water Network for Alignment-RD-03-3 | 2027-02-09 → 2027-02-16 (+7d) | 2027-02-20 → 2027-02-27 (+7d) |
| CO-PW-FH-240 | Installation Works for Fire Hydrant of Potable Water Network for Alignment-RD-03-3 | 2027-02-21 → 2027-02-28 (+7d) | 2027-03-03 → 2027-03-14 (+11d) |
| CO-PW-FH-250 | Trench Backfilling and Compaction Works for Fire Hydrants of Potable Water Network for Alignment-RD-03-3 | 2027-03-04 → 2027-03-15 (+11d) | 2027-03-06 → 2027-03-16 (+10d) |
| IR | **Irrigation Network** | 2027-02-09 → 2027-02-16 (+7d) | 2027-03-06 → 2027-03-16 (+10d) |
| ML | **Main Line Pipes** | 2027-02-09 → 2027-02-16 (+7d) | 2027-03-06 → 2027-03-16 (+10d) |
| CO-IR-ML-350 | Trench Excavation and Bedding Works for Main Lines of Irrigation Network for Alignment-RD-03-3 | 2027-02-09 → 2027-02-16 (+7d) | 2027-02-20 → 2027-02-27 (+7d) |
| CO-IR-ML-360 | Pipes Laying Works for Main Lines of Irrigation Network for Alignment-RD-03-3 | 2027-02-21 → 2027-02-28 (+7d) | 2027-02-23 → 2027-03-02 (+7d) |
| CO-IR-ML-370 | Installation Works for Main Line Valves of Irrigation Network for Alignment-RD-03-3 | 2027-02-24 → 2027-03-03 (+7d) | 2027-02-27 → 2027-03-06 (+7d) |
| CO-IR-ML-390 | Installation Works for Bulbblers And Sprinkler and Irrigation Control System of Irrigation Network for Alignment-RD-03-3 | 2027-02-28 → 2027-03-07 (+7d) | 2027-03-02 → 2027-03-13 (+11d) |
| CO-IR-ML-380 | Trench Backfilling and Compaction Works for Main Lines of Irrigation Network for Alignment-RD-03-3 | 2027-03-03 → 2027-03-14 (+11d) | 2027-03-06 → 2027-03-16 (+10d) |
| MV | **Medium Voltage Network** | 2027-03-16 → 2027-03-23 (+7d) | 2027-03-29 → 2027-04-05 (+7d) |
| CW | **Cabling Works** | 2027-03-16 → 2027-03-23 (+7d) | 2027-03-29 → 2027-04-05 (+7d) |
| CO-MV-ML-340 | Trench Excavation and Bedding Works for Medium Voltage Network for Alignment-RD-03-3 | 2027-03-16 → 2027-03-23 (+7d) | 2027-03-18 → 2027-03-25 (+7d) |
| CO-MV-ML-350 | Duct Laying Works for Medium Voltage Network for Alignment-RD-03-3 | 2027-03-23 → 2027-03-30 (+7d) | 2027-03-25 → 2027-04-01 (+7d) |
| CO-MV-ML-360 | Trench Backfilling and Compaction Works for Medium Voltage Network for Alignment-RD-03-3 | 2027-03-27 → 2027-04-03 (+7d) | 2027-03-29 → 2027-04-05 (+7d) |
| LV | **Low Voltage Network** | 2027-03-30 → 2027-04-06 (+7d) | 2027-05-01 → 2027-05-08 (+7d) |
| MLVC | **Main Low Voltage Cables Works ( Cable 300 MM )** | 2027-03-30 → 2027-04-06 (+7d) | 2027-04-19 → 2027-04-26 (+7d) |
| CON-LV-ML-190 | Trench Excavation and Bedding Works for Main Cable of Low Voltage Network for Alignment-RD-03-3 | 2027-03-30 → 2027-04-06 (+7d) | 2027-04-06 → 2027-04-13 (+7d) |
| CON-LV-ML-200 | Cable Laying Works for Main Cable of Low Voltage Network for Alignment-RD-03-3 | 2027-04-07 → 2027-04-14 (+7d) | 2027-04-14 → 2027-04-21 (+7d) |
| CON-LV-ML-210 | Trench Backfilling and Compaction Works for Main Cable of Low Voltage Network for Alignment-RD-03-3 | 2027-04-15 → 2027-04-22 (+7d) | 2027-04-19 → 2027-04-26 (+7d) |
| SLVC | **Service Low Voltage Cables Works ( Cable 70 MM )** | 2027-04-07 → 2027-04-14 (+7d) | 2027-04-26 → 2027-05-03 (+7d) |
| CON-LV-HC-190 | Trench Excavation and Bedding Works for Service Cable of Low Voltage Network for Alignment-RD-03-3 | 2027-04-07 → 2027-04-14 (+7d) | 2027-04-14 → 2027-04-21 (+7d) |
| CON-LV-HC-200 | Cable Laying Works for Service Cable of Low Voltage Network for Alignment-RD-03-3 | 2027-04-15 → 2027-04-22 (+7d) | 2027-04-22 → 2027-04-29 (+7d) |
| CON-LV-HC-210 | Trench Backfilling and Compaction Works for Service Cable of Low Voltage Network for Alignment-RD-03-3 | 2027-04-24 → 2027-05-01 (+7d) | 2027-04-26 → 2027-05-03 (+7d) |
| DP | **Distribution Pillars Works** | 2027-04-27 → 2027-05-04 (+7d) | 2027-05-01 → 2027-05-08 (+7d) |

| ID | Task | Start | Finish | Complete |
| --- | --- | --- | --- | --- |
| CON-LV-DP-190 | Installation Works for Distribution Pillar Units of Low Voltage Network for Alignment-RD-03-3 | 2027-04-27 → 2027-05-04 (+7d) | 2027-05-01 → 2027-05-08 (+7d) |  |
| SL | **Street Lighting Network** | 2027-03-30 → 2027-04-06 (+7d) | 2027-04-19 → 2027-04-26 (+7d) |  |
| LP | **Lighting Poles Works** | 2027-03-30 → 2027-04-06 (+7d) | 2027-04-19 → 2027-04-26 (+7d) |  |
| CO-SL-LP-450 | Installation Works for Lighting Poles Foundation of Street Lighting Network for Alignment-RD-03-3 | 2027-03-30 → 2027-04-06 (+7d) | 2027-04-05 → 2027-04-12 (+7d) |  |
| CO-SL-LP-460 | Installation Works for Lighting Poles of Street Lighting Network for Alignment-RD-03-3 | 2027-04-06 → 2027-04-13 (+7d) | 2027-04-12 → 2027-04-19 (+7d) |  |
| CO-SL-LP-480 | Backfilling Works for Lighting Poles of Street Lighting Network for Alignment-RD-03-3 | 2027-04-13 → 2027-04-20 (+7d) | 2027-04-19 → 2027-04-26 (+7d) |  |
| CW | **Cabling Works** | 2027-04-13 → 2027-04-20 (+7d) | 2027-04-19 → 2027-04-26 (+7d) |  |
| CO-SL-CL-350 | Cable Laying Works for Street Lighting Network for Alignment-RD-03-3 | 2027-04-13 → 2027-04-20 (+7d) | 2027-04-19 → 2027-04-26 (+7d) |  |
| CO-SL-CL-360 | Trench Backfilling and Compaction Works for Street Lighting Network for Alignment-RD-03-3 | 2027-04-13 → 2027-04-20 (+7d) | 2027-04-19 → 2027-04-26 (+7d) |  |
| TE | **Telecom and Light Current Network** | 2027-04-08 → 2027-04-15 (+7d) | 2027-05-08 → 2027-05-20 (+12d) |  |
| PD | **Ducts Works** | 2027-04-27 → 2027-05-04 (+7d) | 2027-05-08 → 2027-05-20 (+12d) |  |
| CO-TE-DW-230 | Pipes Laying Works for Ducts of Telecom Network for Alignment-RD-03-3 | 2027-04-27 → 2027-05-04 (+7d) | 2027-05-03 → 2027-05-10 (+7d) |  |
| CO-TE-DW-240 | Trench Backfilling and Compaction Works for Ducts of Telecom Network for Alignment-RD-03-3 | 2027-05-04 → 2027-05-11 (+7d) | 2027-05-08 → 2027-05-20 (+12d) |  |
| MH | **Manholes Works** | 2027-04-08 → 2027-04-15 (+7d) | 2027-04-17 → 2027-04-24 (+7d) |  |
| CO-TE-MH-230 | Excavation Works for Manholes of Telecom Network for Alignment-RD-03-3 | 2027-04-08 → 2027-04-15 (+7d) | 2027-04-10 → 2027-04-17 (+7d) |  |
| CO-TE-MH-240 | Installation Works for Manholes of Telecom Network for Alignment-RD-03-3 | 2027-04-11 → 2027-04-18 (+7d) | 2027-04-13 → 2027-04-20 (+7d) |  |
| CO-TE-MH-250 | Backfilling Works for Manholes of Telecom Network for Alignment-RD-03-3 | 2027-04-14 → 2027-04-21 (+7d) | 2027-04-17 → 2027-04-24 (+7d) |  |
| DD | **CCTV, Telephone, MSN, ACs System Works** | 2027-04-18 → 2027-04-25 (+7d) | 2027-04-20 → 2027-04-27 (+7d) |  |
| CO-TE-CTV-210 | Installation of CCTV, Telephone, ACS and MSN Systems Cables for Alignment-RD-03-3 | 2027-04-18 → 2027-04-25 (+7d) | 2027-04-20 → 2027-04-27 (+7d) |  |
| RD | **Road Works** | 2027-05-04 → 2027-05-11 (+7d) | 2027-05-12 → 2027-05-25 (+13d) |  |
| LS | **Pavement Works** | 2027-05-04 → 2027-05-11 (+7d) | 2027-05-08 → 2027-05-20 (+12d) |  |
| CO-RD-PV-220 | Fixing of Curbstone for Sidewalks Pavement for Alignment-RD-03-3 | 2027-05-04 → 2027-05-11 (+7d) | 2027-05-08 → 2027-05-20 (+12d) |  |
| CO-RD-PV-230 | Fixing of Interlock Tiles for Sidewalks Pavement for Alignment-RD-03-3 | 2027-05-04 → 2027-05-11 (+7d) | 2027-05-08 → 2027-05-20 (+12d) |  |
| TS | **Traffic Signs Boards and Roads Marking** | 2027-05-04 → 2027-05-11 (+7d) | 2027-05-12 → 2027-05-25 (+13d) |  |
| CO-RD-F-RM-210 | Application of Road Marking Works For Road Works for Alignment-RD-03-3 | 2027-05-04 → 2027-05-11 (+7d) | 2027-05-06 → 2027-05-13 (+7d) |  |
| CO-RD-F-TS-150 | Installation Works of Traffic Signs Boards For Road Works for Alignment-RD-03-3 | 2027-05-09 → 2027-05-22 (+13d) | 2027-05-12 → 2027-05-25 (+13d) |  |
| 3 | **Finishes for Infrastructure Networks** | 2027-03-30 → 2027-04-06 (+7d) | 2027-05-29 → 2027-06-05 (+7d) |  |
| 11 | **Storm Drainage Network** | 2027-05-06 → 2027-05-13 (+7d) | 2027-05-11 → 2027-05-24 (+13d) |  |
| TF | **Testing and Finishes** | 2027-05-06 → 2027-05-13 (+7d) | 2027-05-11 → 2027-05-24 (+13d) |  |
| CO-SD-ML-TF-130 | Testing Work for Pipes of Storm Drainage Network for Alignment-RD-03-3 | 2027-05-06 → 2027-05-13 (+7d) | 2027-05-11 → 2027-05-24 (+13d) |  |
| 9 | **Potable Water Network** | 2027-04-27 → 2027-05-04 (+7d) | 2027-05-04 → 2027-05-11 (+7d) |  |
| TF | **Testing and Finishes** | 2027-04-27 → 2027-05-04 (+7d) | 2027-05-04 → 2027-05-11 (+7d) |  |
| CO-PW-TF-200 | Fire Hydrant Finishies (S.Box + Safety + Marker Post ) of Potable Water Network for Alignment-RD-03-3 | 2027-04-27 → 2027-05-04 (+7d) | 2027-04-29 → 2027-05-06 (+7d) |  |
| CO-PW-TF-190 | Testing of Potable Water Network for Alignment-RD-03-3 | 2027-05-01 → 2027-05-08 (+7d) | 2027-05-03 → 2027-05-10 (+7d) |  |
| CO-PW-TF-210 | Final Finishes works and Covers for Valves and Valve Chambers for Alignment-RD-03-3 | 2027-05-01 → 2027-05-08 (+7d) | 2027-05-04 → 2027-05-11 (+7d) |  |
| 1 | **Treated Sewage Effluent (Tse)** | 2027-05-23 → 2027-05-30 (+7d) | 2027-05-29 → 2027-06-05 (+7d) |  |
| TF | **Testing and Finishes** | 2027-05-23 → 2027-05-30 (+7d) | 2027-05-29 → 2027-06-05 (+7d) |  |
| CO-TSE-TF-200 | Final Testing (pressure tests) of Treated Sewage Effluent (Tse) for Alignment-RD-03-3 | 2027-05-23 → 2027-05-30 (+7d) | 2027-05-29 → 2027-06-05 (+7d) |  |
| 13 | **Irrigation Network** | 2027-05-01 → 2027-05-08 (+7d) | 2027-05-06 → 2027-05-13 (+7d) |  |
| TF | **Testing and Finishes** | 2027-05-01 → 2027-05-08 (+7d) | 2027-05-06 → 2027-05-13 (+7d) |  |
| CO-IR-TF-210 | Final Testing (pressure tests) of Irrigation Network for Alignment-RD-03-3 | 2027-05-01 → 2027-05-08 (+7d) | 2027-05-06 → 2027-05-13 (+7d) |  |
| 14 | **Medium Voltage Network** | 2027-03-30 → 2027-04-06 (+7d) | 2027-04-05 → 2027-04-12 (+7d) |  |
| TT | **Termination and Testing Works** | 2027-03-30 → 2027-04-06 (+7d) | 2027-04-05 → 2027-04-12 (+7d) |  |
| CO-MV-TF-250 | Testing and Termination Works of Medium Voltage Network for Alignment-RD-03-3 | 2027-03-30 → 2027-04-06 (+7d) | 2027-04-05 → 2027-04-12 (+7d) |  |
| 6 | **Low Voltage Network** | 2027-05-02 → 2027-05-09 (+7d) | 2027-05-08 → 2027-05-20 (+12d) |  |
| TT | **Termination and Testing Works** | 2027-05-02 → 2027-05-09 (+7d) | 2027-05-08 → 2027-05-20 (+12d) |  |
| CON-LV-TT-160 | Testing and Termination Works for Substation Low Voltage Panel Boards of Low Voltage Network for Alignment-RD-03-3 | 2027-05-02 → 2027-05-09 (+7d) | 2027-05-08 → 2027-05-20 (+12d) |  |
| 12 | **Street Lighting Network** | 2027-04-27 → 2027-05-04 (+7d) | 2027-05-22 → 2027-05-29 (+7d) |  |
| TR | **Termination and Testing Works** | 2027-04-27 → 2027-05-04 (+7d) | 2027-05-22 → 2027-05-29 (+7d) |  |
| CO-SL-LP-470 | Installation Works for Lighting Fixtures With Drop Wire of Street Lighting Network for Alignment-RD-03-3 | 2027-04-27 → 2027-05-04 (+7d) | 2027-05-03 → 2027-05-10 (+7d) |  |
| CO-SL-TF-490 | Testing Works for Lighting Poles of Street Lighting Network for Alignment-RD-03-3 | 2027-05-10 → 2027-05-23 (+13d) | 2027-05-22 → 2027-05-29 (+7d) |  |
| ES | **Earthing System Works** | 2027-04-27 → 2027-05-04 (+7d) | 2027-05-09 → 2027-05-22 (+13d) |  |
| CO-SL-ES-280 | Install Earthing System Works for Lighting Poles of Street Lighting Network for Alignment-RD-03-3 | 2027-04-27 → 2027-05-04 (+7d) | 2027-05-03 → 2027-05-10 (+7d) |  |
| CO-SL-ES-290 | Install Earthing System Works for Lighting Panel Boards of Street Lighting Network for Alignment-RD-03-3 | 2027-05-03 → 2027-05-10 (+7d) | 2027-05-09 → 2027-05-22 (+13d) |  |
| 3 | **Telecom and Light Current Network** | 2027-04-22 → 2027-04-29 (+7d) | 2027-05-05 → 2027-05-12 (+7d) |  |
| 1 | **Testing and Finishes** | 2027-04-22 → 2027-04-29 (+7d) | 2027-05-05 → 2027-05-12 (+7d) |  |
| CO-TE-CTV-TF-260 | Testing and Interface modules with Telecom for Alignment-RD-03-3 | 2027-04-22 → 2027-04-29 (+7d) | 2027-04-28 → 2027-05-05 (+7d) |  |
| CO-TE-CTV-TF-340 | Testing and Interface modules with CCTV, Telephone, MSN and Access Control for Alignment-RD-03-3 | 2027-04-29 → 2027-05-06 (+7d) | 2027-05-05 → 2027-05-12 (+7d) |  |
| EX | **External** |  | 2027-05-11 → 2027-05-24 (+13d) |  |
| 2 | **External Road - 1 - 1** |  | 2027-05-10 → 2027-05-23 (+13d) |  |
| EW | **Earthworks** |  | 2026-12-28 → 2027-01-04 (+7d) |  |
| EW | **Earthworks** |  | 2026-12-28 → 2027-01-04 (+7d) |  |
| CO-EW-250_R | Excavation and Backfilling Works Upto Design Level for Earthworks for External Road - 1 - 1(Remaining) | 2026-12-20 → 2026-12-27 (+7d) | 2026-12-28 → 2027-01-04 (+7d) |  |
| RD | **Road Works** | 2027-03-28 → 2026-10-28 (-151d) | 2027-05-10 → 2027-05-23 (+13d) |  |
| 3 | **Road 01** | 2027-03-28 → 2026-10-28 (-151d) | 2027-05-10 → 2027-05-23 (+13d) |  |
| RD | **Pre-Bituminous Construction** | 2027-03-28 → 2026-10-28 (-151d) | 2027-04-15 → 2027-04-22 (+7d) |  |
| CO-RD-PB-240 | Subgrade Layer for Road Works for External Road - 1 - 1 | 2027-03-28 → 2026-10-28 A (-151d) | 2027-04-05 → 2027-04-12 (+7d) | 0% → 69% |
| CO-RD-PB-250 | Aggregate Base Course Layer for Road Works for External Road - 1 - 1 | 2027-04-06 → 2026-10-29 A (-159d) | 2027-04-15 → 2027-04-22 (+7d) | 0% → 69% |
| 1 | **Bituminous Construction** | 2027-04-17 → 2027-04-24 (+7d) | 2027-04-25 → 2027-05-02 (+7d) |  |
| CO-RD-B-260 | Bituminous Base Courses Layers for Road Works for External Road - 1 - 1 | 2027-04-17 → 2027-04-24 (+7d) | 2027-04-20 → 2027-04-27 (+7d) |  |

| ID | Task | Start | Finish | Complete |
| --- | --- | --- | --- | --- |
| CON-RD-MR-250 | Preparation of Asphaltic Wearing Course Layer for Roads Network for External Road - 1 - 1 | 2027-04-21 → 2027-04-28 (+7d) | 2027-04-25 → 2027-05-02 (+7d) |  |
| LS | **Pavement Works** | 2027-04-21 → 2027-04-28 (+7d) | 2027-05-06 → 2027-05-13 (+7d) |  |
| CO-RD-PV-260 | Fixing of Curbstone for Sidewalks Pavement for External Road - 1 - 1 | 2027-04-21 → 2027-04-28 (+7d) | 2027-04-29 → 2027-05-06 (+7d) |  |
| CO-RD-PV-270 | Fixing of Interlock Tiles for Sidewalks Pavement for External Road - 1 - 1 | 2027-05-01 → 2027-05-08 (+7d) | 2027-05-06 → 2027-05-13 (+7d) |  |
| TS | **Traffic Signs Boards and Roads Marking** | 2027-05-08 → 2027-05-20 (+12d) | 2027-05-10 → 2027-05-23 (+13d) |  |
| CO-RD-F-RM-230 | Application of Road Marking Works For Road Works for External Road - 1 - 1 | 2027-05-08 → 2027-05-20 (+12d) | 2027-05-09 → 2027-05-22 (+13d) |  |
| CO-RD-F-TS-170 | Installation Works of Traffic Signs Boards For Road Works for External Road - 1 - 1 | 2027-05-10 → 2027-05-23 (+13d) | 2027-05-10 → 2027-05-23 (+13d) |  |
| 4 | **External Road - 1 - 2** |  | 2027-05-11 → 2027-05-24 (+13d) |  |
| EW | **Earthworks** |  | 2027-01-18 → 2027-01-25 (+7d) |  |
| EW | **Earthworks** |  | 2027-01-18 → 2027-01-25 (+7d) |  |
| CO-EW-280_R | Excavation and Backfilling Works Upto Design Level for Earthworks for External Road - 1 - 2(Remaining) |  | 2027-01-18 → 2027-01-25 (+7d) |  |
| RD | **Road Works** | 2027-03-28 → 2027-04-04 (+7d) | 2027-05-11 → 2027-05-24 (+13d) |  |
| 3 | **Road 01** | 2027-03-28 → 2027-04-04 (+7d) | 2027-05-11 → 2027-05-24 (+13d) |  |
| RD | **Pre-Bituminous Construction** | 2027-03-28 → 2027-04-04 (+7d) | 2027-04-10 → 2027-04-17 (+7d) |  |
| CO-RD-PB-300 | Subgrade Layer for Road Works for External Road - 1 - 2 | 2027-03-28 → 2027-04-04 (+7d) | 2027-04-03 → 2027-04-10 (+7d) |  |
| CO-RD-PB-310 | Aggregate Base Course Layer for Road Works for External Road - 1 - 2 | 2027-04-04 → 2027-04-11 (+7d) | 2027-04-10 → 2027-04-17 (+7d) |  |
| 1 | **Bituminous Construction** | 2027-04-11 → 2027-04-18 (+7d) | 2027-04-22 → 2027-04-29 (+7d) |  |
| CO-RD-B-320 | Bituminous Base Courses Layers for Road Works for External Road - 1 - 2 | 2027-04-11 → 2027-04-18 (+7d) | 2027-04-18 → 2027-04-25 (+7d) |  |
| CON-RD-MR-310 | Preparation of Asphaltic Wearing Course Layer for Roads Network for External Road - 1 - 2 | 2027-04-19 → 2027-04-26 (+7d) | 2027-04-22 → 2027-04-29 (+7d) |  |
| LS | **Pavement Works** | 2027-04-20 → 2027-04-27 (+7d) | 2027-05-03 → 2027-05-10 (+7d) |  |
| CO-RD-PV-320 | Fixing of Curbstone for Sidewalks Pavement for External Road - 1 - 2 | 2027-04-20 → 2027-04-27 (+7d) | 2027-04-26 → 2027-05-03 (+7d) |  |
| CO-RD-PV-330 | Fixing of Interlock Tiles for Sidewalks Pavement for External Road - 1 - 2 | 2027-04-27 → 2027-05-04 (+7d) | 2027-05-03 → 2027-05-10 (+7d) |  |
| TS | **Traffic Signs Boards and Roads Marking** | 2027-05-04 → 2027-05-11 (+7d) | 2027-05-11 → 2027-05-24 (+13d) |  |
| CO-RD-F-RM-260 | Application of Road Marking Works For Road Works for External Road - 1 - 2 | 2027-05-04 → 2027-05-11 (+7d) | 2027-05-08 → 2027-05-20 (+12d) |  |
| CO-RD-F-TS-200 | Installation Works of Traffic Signs Boards For Road Works for External Road - 1 - 2 | 2027-05-09 → 2027-05-22 (+13d) | 2027-05-11 → 2027-05-24 (+13d) |  |
| 1 | **External Road - 2** |  | 2027-05-11 → 2027-05-24 (+13d) |  |
| EW | **Earthworks** |  | 2027-02-11 → 2027-02-18 (+7d) |  |
| EW | **Earthworks** |  | 2027-02-11 → 2027-02-18 (+7d) |  |
| CO-EW-260_R | Excavation and Backfilling Works Upto Design Level for Earthworks for External Road - 2(Remaining) | 2027-01-19 → 2027-01-26 (+7d) | 2027-02-11 → 2027-02-18 (+7d) |  |
| RD | **Road Works** | 2027-03-21 → 2026-10-27 (-145d) | 2027-05-11 → 2027-05-24 (+13d) |  |
| 3 | **Road 01** | 2027-03-21 → 2026-10-27 (-145d) | 2027-05-11 → 2027-05-24 (+13d) |  |
| RD | **Pre-Bituminous Construction** | 2027-03-21 → 2026-10-27 (-145d) | 2027-03-28 → 2027-04-04 (+7d) |  |
| CO-RD-PB-260 | Subgrade Layer for Road Works for External Road - 2 | 2027-03-21 → 2026-10-27 A (-145d) | 2027-03-28 → 2027-04-04 (+7d) | 0% → 56% |
| CO-RD-PB-270 | Aggregate Base Course Layer for Road Works for External Road - 2 | 2027-03-24 → 2026-10-28 A (-147d) | 2027-03-28 → 2027-04-04 (+7d) | 0% → 51% |
| 1 | **Bituminous Construction** | 2027-03-29 → 2027-04-05 (+7d) | 2027-04-20 → 2027-04-27 (+7d) |  |
| CO-RD-B-280 | Bituminous Base Courses Layers for Road Works for External Road - 2 | 2027-03-29 → 2027-04-05 (+7d) | 2027-04-08 → 2027-04-15 (+7d) |  |
| CON-RD-MR-270 | Preparation of Asphaltic Wearing Course Layer for Roads Network for External Road - 2 | 2027-04-10 → 2027-04-17 (+7d) | 2027-04-20 → 2027-04-27 (+7d) |  |
| LS | **Pavement Works** | 2027-04-20 → 2027-04-27 (+7d) | 2027-04-29 → 2027-05-06 (+7d) |  |
| CO-RD-PV-280 | Fixing of Curbstone for Sidewalks Pavement for External Road - 2 | 2027-04-20 → 2027-04-27 (+7d) | 2027-04-29 → 2027-05-06 (+7d) |  |
| CO-RD-PV-290 | Fixing of Interlock Tiles for Sidewalks Pavement for External Road - 2 | 2027-04-20 → 2027-04-27 (+7d) | 2027-04-29 → 2027-05-06 (+7d) |  |
| TS | **Traffic Signs Boards and Roads Marking** | 2027-05-01 → 2027-05-08 (+7d) | 2027-05-11 → 2027-05-24 (+13d) |  |
| CO-RD-F-RM-240 | Application of Road Marking Works For Road Works for External Road - 2 | 2027-05-01 → 2027-05-08 (+7d) | 2027-05-11 → 2027-05-24 (+13d) |  |
| CO-RD-F-TS-180 | Installation Works of Traffic Signs Boards For Road Works for External Road - 2 | 2027-05-03 → 2027-05-10 (+7d) | 2027-05-04 → 2027-05-11 (+7d) |  |
| 3 | **External Road - 3** |  | 2027-05-11 → 2027-05-24 (+13d) |  |
| EW | **Earthworks** |  | 2027-02-20 → 2027-02-27 (+7d) |  |
| EW | **Earthworks** |  | 2027-02-20 → 2027-02-27 (+7d) |  |
| CO-EW-270_R | Excavation and Backfilling Works Upto Design Level for Earthworks for External Road - 3(Remaining) |  | 2027-02-20 → 2027-02-27 (+7d) |  |
| TE | **Telecom and Light Current Network** | 2027-02-02 → 2027-02-09 (+7d) | 2027-03-27 → 2027-04-03 (+7d) |  |
| MH | **Manholes Works** | 2027-02-02 → 2027-02-09 (+7d) | 2027-03-20 → 2027-03-27 (+7d) |  |
| CO-TE-MH-290 | Excavation Works for Manholes of Telecom Network for External Road - 3 | 2027-02-02 → 2027-02-09 (+7d) | 2027-02-22 → 2027-03-01 (+7d) |  |
| CO-TE-MH-300 | Installation Works for Manholes of Telecom Network for External Road - 3 | 2027-02-23 → 2027-03-02 (+7d) | 2027-03-20 → 2027-03-27 (+7d) |  |
| CO-TE-MH-310 | Backfilling Works for Manholes of Telecom Network for External Road - 3 | 2027-03-14 → 2027-03-21 (+7d) | 2027-03-20 → 2027-03-27 (+7d) |  |
| 1 | **Testing and Finishes** | 2027-03-21 → 2027-03-28 (+7d) | 2027-03-27 → 2027-04-03 (+7d) |  |
| CO-TE-CTV-TF-360 | Testing and Interface modules with Telecom for External Road - 3 | 2027-03-21 → 2027-03-28 (+7d) | 2027-03-27 → 2027-04-03 (+7d) |  |
| RD | **Road Works** |  | 2027-05-11 → 2027-05-24 (+13d) |  |
| 3 | **Road 01** |  | 2027-05-11 → 2027-05-24 (+13d) |  |
| RD | **Pre-Bituminous Construction** |  | 2027-04-05 → 2027-04-12 (+7d) |  |
| CO-RD-PB-280 | Subgrade Layer for Road Works for External Road - 3 |  | 2027-03-27 → 2027-04-03 (+7d) |  |
| CO-RD-PB-290 | Aggregate Base Course Layer for Road Works for External Road - 3 |  | 2027-04-05 → 2027-04-12 (+7d) |  |
| 1 | **Bituminous Construction** | 2027-04-10 → 2027-04-17 (+7d) | 2027-05-05 → 2027-05-12 (+7d) |  |
| CO-RD-B-300 | Bituminous Base Courses Layers for Road Works for External Road - 3 | 2027-04-10 → 2027-04-17 (+7d) | 2027-04-22 → 2027-04-29 (+7d) |  |
| CON-RD-MR-290 | Preparation of Asphaltic Wearing Course Layer for Roads Network for External Road - 3 | 2027-04-24 → 2027-05-01 (+7d) | 2027-05-05 → 2027-05-12 (+7d) |  |
| LS | **Pavement Works** | 2027-05-01 → 2027-05-08 (+7d) | 2027-05-03 → 2027-05-10 (+7d) |  |
| CO-RD-PV-300 | Fixing of Curbstone for Sidewalks Pavement for External Road - 3 | 2027-05-01 → 2027-05-08 (+7d) | 2027-05-03 → 2027-05-10 (+7d) |  |
| CO-RD-PV-310 | Fixing of Interlock Tiles for Sidewalks Pavement for External Road - 3 | 2027-05-01 → 2027-05-08 (+7d) | 2027-05-03 → 2027-05-10 (+7d) |  |
| TS | **Traffic Signs Boards and Roads Marking** | 2027-05-06 → 2027-05-13 (+7d) | 2027-05-11 → 2027-05-24 (+13d) |  |
| CO-RD-F-RM-250 | Application of Road Marking Works For Road Works for External Road - 3 | 2027-05-06 → 2027-05-13 (+7d) | 2027-05-11 → 2027-05-24 (+13d) |  |
| CO-RD-F-TS-190 | Installation Works of Traffic Signs Boards For Road Works for External Road - 3 | 2027-05-06 → 2027-05-13 (+7d) | 2027-05-09 → 2027-05-22 (+13d) |  |
| GEN | **Superstructure Work** |  | 2027-06-23 → 2027-06-30 (+7d) |  |
| 4 | **Utility Buildings** |  | 2027-06-23 → 2027-06-30 (+7d) |  |

| ID | Task | Start | Finish |
| --- | --- | --- | --- |
| 4 | **Water Pump Station** |  | 2027-06-23 → 2027-06-30 (+7d) |
| 1 | **Civil work** |  | 2026-12-15 → 2026-12-22 (+7d) |
| 1 | **SubStructure** |  | 2026-11-15 → 2026-11-22 (+7d) |
| CO-UB-PS-160 | Backfilling and compaction work for pump station | 2026-11-11 → 2026-11-18 (+7d) | 2026-11-15 → 2026-11-22 (+7d) |
| 2 | **Super structure** |  | 2026-12-15 → 2026-12-22 (+7d) |
| CO-UB-PS-200 | curing and deshuttering formwork for Wall columns | 2026-11-16 → 2026-11-23 (+7d) | 2026-11-23 → 2026-11-30 (+7d) |
| CO-UB-PS-210 | Waterproofing for Walls columns | 2026-11-24 → 2026-12-01 (+7d) | 2026-11-25 → 2026-12-02 (+7d) |
| CO-UB-PS-220 | Formwork for pump roof | 2026-11-26 → 2026-12-03 (+7d) | 2026-11-30 → 2026-12-07 (+7d) |
| CO-UB-PS-230 | Steel fixing for pump roof | 2026-12-01 → 2026-12-08 (+7d) | 2026-12-05 → 2026-12-12 (+7d) |
| CO-UB-PS-240 | pouring for pump roof | 2026-12-06 → 2026-12-13 (+7d) | 2026-12-07 → 2026-12-14 (+7d) |
| CO-UB-PS-250 | curing and deshuttering formwork for pump roof | 2026-12-08 → 2026-12-15 (+7d) | 2026-12-15 → 2026-12-22 (+7d) |
| 2 | **Architectural work** | 2026-12-16 → 2026-12-23 (+7d) | 2027-01-19 → 2027-01-26 (+7d) |
| CO-UB-PS-260 | Executing Masonry Works for Water Pump station building | 2026-12-16 → 2026-12-23 (+7d) | 2026-12-23 → 2026-12-30 (+7d) |
| CO-UB-PS-270 | Executing Plastering Works for Pump station building | 2026-12-24 → 2026-12-31 (+7d) | 2026-12-31 → 2027-01-07 (+7d) |
| CO-UB-PS-280 | Executing Painting and Finishes Works for Pump station building | 2027-01-02 → 2027-01-09 (+7d) | 2027-01-10 → 2027-01-17 (+7d) |
| CO-UB-PS-320 | Doors and windows Fixing &Stair Tiles | 2027-01-11 → 2027-01-18 (+7d) | 2027-01-19 → 2027-01-26 (+7d) |
| 4 | **Mechanical work** | 2027-05-08 → 2027-05-20 (+12d) | 2027-06-23 → 2027-06-30 (+7d) |
| CO-UB-PS-340 | Executing HVAC System for Water Pump station building | 2027-05-08 → 2027-05-20 (+12d) | 2027-05-24 → 2027-05-31 (+7d) |
| CO-UB-PS-360 | Executing Fire fighting institution works(piping and wire installation) for Water Pump station building | 2027-05-25 → 2027-06-01 (+7d) | 2027-06-05 → 2027-06-12 (+7d) |
| CO-UB-PS-380 | Executing Plummbing works for Water Pump station building | 2027-06-06 → 2027-06-13 (+7d) | 2027-06-16 → 2027-06-23 (+7d) |
| CO-UB-PS-390 | Installation of pumps | 2027-06-17 → 2027-06-24 (+7d) | 2027-06-23 → 2027-06-30 (+7d) |
| 3 | **Sewage Lift Station** |  | 2027-01-28 → 2027-02-04 (+7d) |
| 1 | **Civil work** |  | 2027-01-25 → 2027-02-01 (+7d) |
| 2 | **Super structure** |  | 2027-01-25 → 2027-02-01 (+7d) |
| CO-UB-LS-360 | pouring for pump roof |  | 2027-01-11 → 2027-01-18 (+7d) |
| CO-UB-LS-370 | curing and deshuttering formwork for pump roof | 2027-01-12 → 2027-01-19 (+7d) | 2027-01-25 → 2027-02-01 (+7d) |
| 2 | **Architectural work** | 2027-01-26 → 2027-02-02 (+7d) | 2027-01-28 → 2027-02-04 (+7d) |
| CO-UB-LS-390 | Executing Plastering and Finishes Works for Sewage Lift Station | 2027-01-26 → 2027-02-02 (+7d) | 2027-01-28 → 2027-02-04 (+7d) |
| 5 | **Potable Water Tank** | 2027-01-02 → 2027-01-09 (+7d) | 2027-04-04 → 2027-04-11 (+7d) |
| 1 | **Eearth Work** | 2027-01-02 → 2027-01-09 (+7d) | 2027-01-26 → 2027-02-02 (+7d) |
| CO-UB-PWT-100 | Excavation work for tank foundation tank formation level for Potable Water Tank | 2027-01-02 → 2027-01-09 (+7d) | 2027-01-14 → 2027-01-21 (+7d) |
| CO-UB-PWT-110 | Soil replacement Up to tank formation level for Potable Water Tank | 2027-01-16 → 2027-01-23 (+7d) | 2027-01-26 → 2027-02-02 (+7d) |
| 2 | **Structural Work** | 2027-01-27 → 2027-02-03 (+7d) | 2027-03-18 → 2027-03-25 (+7d) |
| CO-UB-PWT-120 | Plain Concrete works for Potable Water Tank | 2027-01-27 → 2027-02-03 (+7d) | 2027-02-03 → 2027-02-10 (+7d) |
| CO-UB-PWT-130 | Form work for Tank Foundation for Potable Water Tank | 2027-02-04 → 2027-02-11 (+7d) | 2027-02-17 → 2027-02-24 (+7d) |
| CO-UB-PWT-140 | Steel Reinforcement work for Tank Foundation for Potable Water Tank | 2027-02-18 → 2027-02-25 (+7d) | 2027-03-03 → 2027-03-14 (+11d) |
| CO-UB-PWT-150 | Casting concrete for Tank Foundation for Potable Water Tank | 2027-03-04 → 2027-03-15 (+11d) | 2027-03-18 → 2027-03-25 (+7d) |
| 3 | **Tank Shell Erection&Roof Installation** | 2027-03-20 → 2027-03-27 (+7d) | 2027-04-04 → 2027-04-11 (+7d) |
| CO-UB-PWT-170 | shell erection for Potable Water Tank | 2027-03-20 → 2027-03-27 (+7d) | 2027-04-04 → 2027-04-11 (+7d) |
| 2 | **IrrigationTank** | 2027-01-16 → 2027-01-23 (+7d) | 2027-04-03 → 2027-04-10 (+7d) |
| 1 | **Eearth Work** | 2027-01-16 → 2027-01-23 (+7d) | 2027-02-09 → 2027-02-16 (+7d) |
| CO-UB-IRT-140 | Excavation work for tank foundation tank formation level for Irrigation Tank | 2027-01-16 → 2027-01-23 (+7d) | 2027-01-28 → 2027-02-04 (+7d) |
| CO-UB-IRT-150 | Soil replacement Up to tank formation level for Irrigation Tank | 2027-01-30 → 2027-02-06 (+7d) | 2027-02-09 → 2027-02-16 (+7d) |
| 2 | **Structural Work** | 2027-02-10 → 2027-02-17 (+7d) | 2027-03-17 → 2027-03-24 (+7d) |
| CO-UB-IRT-160 | Plain Concrete works for Irrigation Tank | 2027-02-10 → 2027-02-17 (+7d) | 2027-02-13 → 2027-02-20 (+7d) |
| CO-UB-IRT-170 | Form work for Tank Foundation for Irrigation Tank | 2027-02-14 → 2027-02-21 (+7d) | 2027-02-24 → 2027-03-03 (+7d) |
| CO-UB-IRT-180 | Steel Reinforcement work for Tank Foundation for Irrigation Tank | 2027-02-25 → 2027-03-04 (+7d) | 2027-03-13 → 2027-03-20 (+7d) |
| CO-UB-IRT-190 | Casting concrete for Tank Foundation for Irrigation Tank | 2027-03-14 → 2027-03-21 (+7d) | 2027-03-17 → 2027-03-24 (+7d) |
| 3 | **Tank Shell Erection&Roof Installation** | 2027-03-18 → 2027-03-25 (+7d) | 2027-04-03 → 2027-04-10 (+7d) |
| CO-UB-IRT-210 | shell erection for Irrigation Tank | 2027-03-18 → 2027-03-25 (+7d) | 2027-04-03 → 2027-04-10 (+7d) |
| 1 | **Control Room** |  | 2027-05-13 → 2027-05-26 (+13d) |
| 5 | **Civil Work** |  | 2027-01-06 → 2027-01-13 (+7d) |
| CO-UB-CR-140 | Pouring Beams and Slab For Control Room |  | 2027-01-06 → 2027-01-13 (+7d) |
| 6 | **Finishing Work** | 2027-01-20 → 2027-01-27 (+7d) | 2027-05-13 → 2027-05-26 (+13d) |
| 1 | **Architictural work** | 2027-01-20 → 2027-01-27 (+7d) | 2027-03-13 → 2027-03-20 (+7d) |
| CO-UB-CR-150 | Brick Work For Control Room | 2027-01-20 → 2027-01-27 (+7d) | 2027-01-31 → 2027-02-07 (+7d) |
| CO-UB-CR-160 | Thermal & Moisture Protection Work for Control Room | 2027-02-01 → 2027-02-08 (+7d) | 2027-02-08 → 2027-02-15 (+7d) |
| CO-UB-CR-200 | Install For Curtian Wall and Windows and Doors | 2027-02-09 → 2027-02-16 (+7d) | 2027-02-16 → 2027-02-23 (+7d) |
| CO-UB-CR-240 | External Finshing Work (Walls and Floor) | 2027-02-17 → 2027-02-24 (+7d) | 2027-02-25 → 2027-03-04 (+7d) |
| CO-UB-CR-250 | Internal Finshing Work (Walls,Floor and Ceiling) | 2027-02-27 → 2027-03-06 (+7d) | 2027-03-13 → 2027-03-20 (+7d) |
| 3 | **Mechanical Work** | 2027-02-01 → 2027-02-08 (+7d) | 2027-04-28 → 2027-05-05 (+7d) |
| 3 | **HVAC System** | 2027-02-01 → 2027-02-08 (+7d) | 2027-04-28 → 2027-05-05 (+7d) |
| CO-UB-CR-170 | Install of Refrigerant Piping ( fabricated metal ducts with flanges complete with supports, vanes, dampers ) | 2027-02-01 → 2027-02-08 (+7d) | 2027-02-24 → 2027-03-03 (+7d) |
| CO-UB-CR-260 | Install of Mini split actual and Ducted split | 2027-03-14 → 2027-03-21 (+7d) | 2027-04-05 → 2027-04-12 (+7d) |
| CO-UB-CR-310 | Install of Air Grills 150mm x150mm and Air Diffuser 600mm x 600mm | 2027-04-06 → 2027-04-13 (+7d) | 2027-04-28 → 2027-05-05 (+7d) |
| 4 | **Fire Fitting System** | 2027-02-25 → 2027-03-04 (+7d) | 2027-03-20 → 2027-03-27 (+7d) |
| CO-UB-CR-180 | Installation & Testing of 2 hours Fire rated system for closing the openings between rooms with help of Rock wool | 2027-02-25 → 2027-03-04 (+7d) | 2027-03-08 → 2027-03-18 (+10d) |
| CO-UB-CR-270 | Install Fire Extinguishers | 2027-03-14 → 2027-03-21 (+7d) | 2027-03-20 → 2027-03-27 (+7d) |
| 1 | **Plumbing System** | 2027-03-14 → 2027-03-21 (+7d) | 2027-03-27 → 2027-04-03 (+7d) |
| CO-UB-CR-370 | Install of Sanitary Wares Including Relevant Pipes and Fittings | 2027-03-14 → 2027-03-21 (+7d) | 2027-03-27 → 2027-04-03 (+7d) |

| ID | Task | Start | Finish |
| --- | --- | --- | --- |
| 4 | **Electrical Work** | 2027-03-14 → 2027-03-21 (+7d) | 2027-05-06 → 2027-05-13 (+7d) |
| 1 | **LV Power** | 2027-03-14 → 2027-03-21 (+7d) | 2027-05-02 → 2027-05-09 (+7d) |
| CO-UB-CR-190 | Install of Distribution board For Control Room | 2027-03-14 → 2027-03-21 (+7d) | 2027-03-24 → 2027-03-31 (+7d) |
| CO-UB-CR-220 | Install of Earting Cable for Control Room | 2027-03-25 → 2027-04-01 (+7d) | 2027-04-10 → 2027-04-17 (+7d) |
| CO-UB-CR-280 | Install of Socket outlet and LED Lighting | 2027-04-11 → 2027-04-18 (+7d) | 2027-05-02 → 2027-05-09 (+7d) |
| 3 | **Fire Detection And Alarm System** | 2027-03-28 → 2027-04-04 (+7d) | 2027-05-06 → 2027-05-13 (+7d) |
| CO-UB-CR-210 | Install of 2C x 1.5 Sqm FR Rated Armored - Cable For Loop Wiring | 2027-03-28 → 2027-04-04 (+7d) | 2027-03-31 → 2027-04-07 (+7d) |
| CO-UB-CR-230 | Install of Transmission Communication cable - Fiber Optics 12Core | 2027-04-01 → 2027-04-08 (+7d) | 2027-04-05 → 2027-04-12 (+7d) |
| CO-UB-CR-290 | Install of power supply system for fire alarm control panel | 2027-04-06 → 2027-04-13 (+7d) | 2027-04-10 → 2027-04-17 (+7d) |
| CO-UB-CR-300 | Install of Fire Alarm Control panel | 2027-04-11 → 2027-04-18 (+7d) | 2027-04-17 → 2027-04-24 (+7d) |
| CO-UB-CR-320 | Installation of the addressable manual call point with operation safety glass breaking | 2027-04-18 → 2027-04-25 (+7d) | 2027-04-20 → 2027-04-27 (+7d) |
| CO-UB-CR-330 | Install of the photoelectric heat & smoke detector | 2027-04-21 → 2027-04-28 (+7d) | 2027-04-26 → 2027-05-03 (+7d) |
| CO-UB-CR-340 | Install of Sounder With Beacon | 2027-04-27 → 2027-05-04 (+7d) | 2027-05-02 → 2027-05-09 (+7d) |
| CO-UB-CR-350 | Install of Addressable Control module | 2027-05-03 → 2027-05-10 (+7d) | 2027-05-06 → 2027-05-13 (+7d) |
| 2 | **Furnitures work** | 2027-05-08 → 2027-05-20 (+12d) | 2027-05-13 → 2027-05-26 (+13d) |
| CO-UB-CR-360 | Office Chairs,Tables and Stand | 2027-05-08 → 2027-05-20 (+12d) | 2027-05-13 → 2027-05-26 (+13d) |
| ML | **Softscape and Planting Works** | 2027-05-01 → 2027-05-08 (+7d) | 2027-06-15 → 2027-06-22 (+7d) |
| CO-LS-PL-160 | Planting Works: Planting including plants, forming planting beds, suitable soil, supports, and protection | 2027-05-01 → 2027-05-08 (+7d) | 2027-05-23 → 2027-05-30 (+7d) |
| CO-LS-SF-170 | Site Furnishings (Seating Bench,Stone Boulders and Gravel) | 2027-05-24 → 2027-05-31 (+7d) | 2027-06-15 → 2027-06-22 (+7d) |
| 6 | **Storm Drainage Ponds** |  | 2027-05-05 → 2027-05-12 (+7d) |
| CO-SD-PO-100-P1 | Excavation & Filling Works - PART 1 for Storm Drainage Ponds |  | 2027-03-17 → 2027-03-24 (+7d) |
| CO-SD-PO-110-P1 | Finished Grouted Riprap - PART 1 for Storm Drainage Ponds |  | 2027-03-27 → 2027-04-03 (+7d) |
| CO-SD-PO-100-P2 | Excavation & Filling Works - PART 2 for Storm Drainage Ponds | 2027-03-28 → 2027-04-04 (+7d) | 2027-04-15 → 2027-04-22 (+7d) |
| CO-SD-PO-110-P2 | Finished Grouted Riprap - PART 2 for Storm Drainage Ponds | 2027-04-17 → 2027-04-24 (+7d) | 2027-05-05 → 2027-05-12 (+7d) |
| 1 | **Boundary Fence and Gaurd Room** |  | 2027-06-13 → 2027-06-20 (+7d) |
| 1 | **Gaurd Room Work** | 2027-04-18 → 2027-04-25 (+7d) | 2027-06-13 → 2027-06-20 (+7d) |
| 1 | **Civil Work** | 2027-04-18 → 2027-04-25 (+7d) | 2027-05-04 → 2027-05-11 (+7d) |
| A1000 | Excavation Work For Guard Room Foundation | 2027-04-18 → 2027-04-25 (+7d) | 2027-04-22 → 2027-04-29 (+7d) |
| A1010 | Pouring for Plain Concrete for Guard Room | 2027-04-24 → 2027-05-01 (+7d) | 2027-04-24 → 2027-05-01 (+7d) |
| A1020 | Pouring R.C Footing for Guard Room | 2027-04-25 → 2027-05-02 (+7d) | 2027-04-27 → 2027-05-04 (+7d) |
| A1030 | Pouring R.C Columns for Guard Room | 2027-04-28 → 2027-05-05 (+7d) | 2027-05-01 → 2027-05-08 (+7d) |
| A1040 | Pouring Beams and Slab for Guard Room | 2027-05-02 → 2027-05-09 (+7d) | 2027-05-04 → 2027-05-11 (+7d) |
| 2 | **Finishing Work** | 2027-05-05 → 2027-05-12 (+7d) | 2027-06-13 → 2027-06-20 (+7d) |
| 1 | **Architectural work** | 2027-05-05 → 2027-05-12 (+7d) | 2027-06-10 → 2027-06-17 (+7d) |
| A1050 | Brick Works for Architectural Works for Guard Rooms | 2027-05-05 → 2027-05-12 (+7d) | 2027-05-11 → 2027-05-24 (+13d) |
| A1060 | Thermal & Moisture Protection Work for Architectural Works for Guard Rooms | 2027-05-12 → 2027-05-25 (+13d) | 2027-05-23 → 2027-05-30 (+7d) |
| A1080 | External Finshing Work (Walls and Floor) for Architectural Works for Guard Rooms | 2027-05-30 → 2027-06-06 (+7d) | 2027-05-31 → 2027-06-07 (+7d) |
| A1090 | Internal Finshing Work (Walls,Floor and Ceiling) for Architectural Works for Guard Rooms | 2027-05-30 → 2027-06-06 (+7d) | 2027-06-05 → 2027-06-12 (+7d) |
| A1070 | Installation of Windows and Doors for Architectural Works for Guard Rooms | 2027-06-06 → 2027-06-13 (+7d) | 2027-06-10 → 2027-06-17 (+7d) |
| 3 | **Mechanical Work** | 2027-05-24 → 2027-05-31 (+7d) | 2027-06-01 → 2027-06-08 (+7d) |
| 1 | **Drainage System** | 2027-05-24 → 2027-05-31 (+7d) | 2027-06-01 → 2027-06-08 (+7d) |
| A1110 | Installation of Sewage Piping System complete with joints, angles, reducer etc. for Drainage System for Guard Rooms | 2027-05-24 → 2027-05-31 (+7d) | 2027-05-27 → 2027-06-03 (+7d) |
| A1120 | Installation of all Sanitary Ware for Drainage System for Guard Rooms | 2027-05-29 → 2027-06-05 (+7d) | 2027-06-01 → 2027-06-08 (+7d) |
| 2 | **Water Supply System** | 2027-05-24 → 2027-05-31 (+7d) | 2027-06-01 → 2027-06-08 (+7d) |
| A1140 | Installation of Water Piping System complete with joints, angles, reducer etc. for Water Supply System for Guard Rooms | 2027-05-24 → 2027-05-31 (+7d) | 2027-05-26 → 2027-06-02 (+7d) |
| A1180 | Installation oF Water Supply Wares (Water Heater, Faucets, Etc..) for Water Supply System for Guard Rooms | 2027-05-27 → 2027-06-03 (+7d) | 2027-05-29 → 2027-06-05 (+7d) |
| A1240 | Installation of water tanks for Water Supply System for Guard Rooms | 2027-06-01 → 2027-06-08 (+7d) | 2027-06-01 → 2027-06-08 (+7d) |
| 3 | **HVAC System** | 2027-05-24 → 2027-05-31 (+7d) | 2027-05-26 → 2027-06-02 (+7d) |
| A1200 | Installation of AC Piping for HVAC System for Guard Rooms | 2027-05-24 → 2027-05-31 (+7d) | 2027-05-25 → 2027-06-01 (+7d) |
| A1190 | Installation of AC Units for HVAC System for Guard Rooms | 2027-05-26 → 2027-06-02 (+7d) | 2027-05-26 → 2027-06-02 (+7d) |
| 4 | **Fire Fighting System** | 2027-05-24 → 2027-05-31 (+7d) | 2027-05-26 → 2027-06-02 (+7d) |
| A1220 | Installation & Testing of 2 hours Fire Fighting system for Fire Fighting System for Guard Rooms | 2027-05-24 → 2027-05-31 (+7d) | 2027-05-25 → 2027-06-01 (+7d) |
| A1230 | Installation of Fire Extinguishers for Fire Fighting System for Guard Rooms | 2027-05-26 → 2027-06-02 (+7d) | 2027-05-26 → 2027-06-02 (+7d) |
| 4 | **Electrical Work** | 2027-05-24 → 2027-05-31 (+7d) | 2027-06-05 → 2027-06-12 (+7d) |
| 1 | **LV Power** | 2027-05-24 → 2027-05-31 (+7d) | 2027-06-02 → 2027-06-09 (+7d) |
| A1250 | Installation of Conduits and Cables for LV System for Gaurd Rooms | 2027-05-24 → 2027-05-31 (+7d) | 2027-05-29 → 2027-06-05 (+7d) |
| A1260 | Install of Eletrical Finishes (DBs, Sockets and Lightings) and Termination for LV System for Gaurd Rooms | 2027-05-30 → 2027-06-06 (+7d) | 2027-06-02 → 2027-06-09 (+7d) |
| 3 | **Fire Detection And Alarm System** | 2027-05-24 → 2027-05-31 (+7d) | 2027-06-05 → 2027-06-12 (+7d) |
| A1340 | Installation of Conduits and Cables for Fire Alarm System for Gaurd Rooms | 2027-05-24 → 2027-05-31 (+7d) | 2027-05-29 → 2027-06-05 (+7d) |
| A1350 | Installation of Fire Alarm Devices (AMCP, SD,HD, Sounder and Panels) for Fire Alarm System for Gaurd Rooms | 2027-05-30 → 2027-06-06 (+7d) | 2027-06-05 → 2027-06-12 (+7d) |
| 2 | **Furniture work** | 2027-06-12 → 2027-06-19 (+7d) | 2027-06-13 → 2027-06-20 (+7d) |
| A1100 | Office Chairs,Tables and Stand | 2027-06-12 → 2027-06-19 (+7d) | 2027-06-13 → 2027-06-20 (+7d) |
| 3 | **Boundary Fence** |  | 2027-06-02 → 2027-06-09 (+7d) |
| 2 | **Boundary Fence - South** |  | 2027-04-12 → 2027-04-19 (+7d) |
| 1 | **Civil Work** |  | 2027-01-09 → 2027-01-16 (+7d) |
| CO-SU-FE-N-CI-130 | Pouring R.C Columns For Boundary Fence South |  | 2026-12-27 → 2027-01-03 (+7d) |
| CO-SU-FE-N-CI-140 | Pouring Beams For Boundary Fence South | 2026-12-27 → 2027-01-03 (+7d) | 2027-01-09 → 2027-01-16 (+7d) |
| 5 | **Finishing Work** |  | 2027-04-12 → 2027-04-19 (+7d) |
| 4 | **Architictural work** |  | 2027-03-18 → 2027-03-25 (+7d) |
| CO-SU-FE-N-AR-100 | Install Brick Work For Boundary Fence South |  | 2027-01-31 → 2027-02-07 (+7d) |

| ID | Task | Start | Finish | Other |
| --- | --- | --- | --- | --- |
| CO-SU-FE-N-AR-110 | Insulation For Boundary Fence South | 2027-02-16 → 2027-02-23 (+7d) | 2027-03-04 → 2027-03-15 (+11d) |  |
| CO-SU-FE-N-AR-120 | Install all the Relevant Cladding and Finishes For Boundary Fence South | 2027-03-06 → 2027-03-16 (+10d) | 2027-03-18 → 2027-03-25 (+7d) |  |
| 3 | **Electrical Work** | 2027-02-01 → 2027-02-08 (+7d) | 2027-04-12 → 2027-04-19 (+7d) |  |
| CO-SU-FE-N-EL-240 | Installation of Conduits and Cables for Electricial Works For Boundary Fence South | 2027-02-01 → 2027-02-08 (+7d) | 2027-02-15 → 2027-02-22 (+7d) |  |
| CO-SU-FE-N-EL-250 | Install, fixings, testing of all electrical finishes and lightings for Electricial Works For Boundary Fence South | 2027-03-20 → 2027-03-27 (+7d) | 2027-04-12 → 2027-04-19 (+7d) |  |
| 1 | **Boundary Fence - West** |  | 2027-04-22 → 2027-04-29 (+7d) |  |
| 5 | **Finishing Work** |  | 2027-04-22 → 2027-04-29 (+7d) |  |
| 4 | **Architictural work** |  | 2027-04-05 → 2027-04-12 (+7d) |  |
| CO-SU-FE-N-AR-130 | Install Brick Work For Boundary Fence West |  | 2027-02-11 → 2027-02-18 (+7d) |  |
| CO-SU-FE-N-AR-140 | Insulation For Boundary Fence West |  | 2027-03-22 → 2027-03-29 (+7d) |  |
| CO-SU-FE-N-AR-150 | Install all the Relevant Cladding and Finishes For Boundary Fence West | 2027-03-23 → 2027-03-30 (+7d) | 2027-04-05 → 2027-04-12 (+7d) |  |
| 3 | **Electrical Work** | 2027-02-16 → 2027-02-23 (+7d) | 2027-04-22 → 2027-04-29 (+7d) |  |
| CO-SU-FE-N-EL-260 | Installation of Conduits and Cables for Electricial Works For Boundary Fence West | 2027-02-16 → 2027-02-23 (+7d) | 2027-02-24 → 2027-03-03 (+7d) |  |
| CO-SU-FE-N-EL-270 | Install, fixings, testing of all electrical finishes and lightings for Electricial Works For Boundary Fence West | 2027-04-13 → 2027-04-20 (+7d) | 2027-04-22 → 2027-04-29 (+7d) |  |
| 3 | **Boundary Fence - North** |  | 2027-04-19 → 2027-04-26 (+7d) |  |
| 1 | **Civil Work** |  | 2027-01-23 → 2027-01-30 (+7d) |  |
| CO-SU-FE-N-CI-240 | Pouring Beams For Boundary Fence North | 2027-01-10 → 2027-01-17 (+7d) | 2027-01-23 → 2027-01-30 (+7d) |  |
| 5 | **Finishing Work** |  | 2027-04-19 → 2027-04-26 (+7d) |  |
| 4 | **Architictural work** |  | 2027-04-12 → 2027-04-19 (+7d) |  |
| CO-SU-FE-N-AR-160 | Install Brick Work For Boundary Fence North |  | 2027-02-20 → 2027-02-27 (+7d) |  |
| CO-SU-FE-N-AR-180 | Install all the Relevant Cladding and Finishes For Boundary Fence North |  | 2027-04-12 → 2027-04-19 (+7d) |  |
| CO-SU-FE-N-AR-170 | Insulation For Boundary Fence North | 2027-03-23 → 2027-03-30 (+7d) | 2027-04-04 → 2027-04-11 (+7d) |  |
| 3 | **Electrical Work** | 2027-02-25 → 2027-03-04 (+7d) | 2027-04-19 → 2027-04-26 (+7d) |  |
| CO-SU-FE-N-EL-280 | Installation of Conduits and Cables for Electricial Works For Boundary Fence North | 2027-02-25 → 2027-03-04 (+7d) | 2027-03-04 → 2027-03-15 (+11d) |  |
| CO-SU-FE-N-EL-290 | Install, fixings, testing of all electrical finishes and lightings for Electricial Works For Boundary Fence North | 2027-04-13 → 2027-04-20 (+7d) | 2027-04-19 → 2027-04-26 (+7d) |  |
| 4 | **Boundary Fence - East** |  | 2027-06-02 → 2027-06-09 (+7d) |  |
| 1 | **Civil Work** |  | 2027-02-03 → 2027-02-10 (+7d) |  |
| CO-SU-FE-N-CI-280 | Pouring R.C Columns For Boundary Fence East |  | 2027-01-16 → 2027-01-23 (+7d) |  |
| CO-SU-FE-N-CI-290 | Pouring Beams For Boundary Fence East | 2027-01-24 → 2027-01-31 (+7d) | 2027-02-03 → 2027-02-10 (+7d) |  |
| 5 | **Finishing Work** |  | 2027-06-02 → 2027-06-09 (+7d) |  |
| 4 | **Architictural work** |  | 2027-05-27 → 2027-06-03 (+7d) |  |
| CO-SU-FE-N-AR-190 | Install Brick Work For Boundary Fence East |  | 2027-04-29 → 2027-05-06 (+7d) |  |
| CO-SU-FE-N-AR-210 | Install all the Relevant Cladding and Finishes For Boundary Fence East | 2027-05-12 → 2027-05-25 (+13d) | 2027-05-27 → 2027-06-03 (+7d) |  |
| 3 | **Electrical Work** | 2027-05-01 → 2027-05-08 (+7d) | 2027-06-02 → 2027-06-09 (+7d) |  |
| CO-SU-FE-N-EL-300 | Installation of Conduits and Cables for Electricial Works For Boundary Fence East | 2027-05-01 → 2027-05-08 (+7d) | 2027-05-11 → 2027-05-24 (+13d) |  |
| CO-SU-FE-N-EL-310 | Install, fixings, testing of all electrical finishes and lightings for Electricial Works For Boundary Fence East | 2027-05-29 → 2027-06-05 (+7d) | 2027-06-02 → 2027-06-09 (+7d) |  |
| TC | **Testing and Comissioning** | 2027-06-14 → 2027-06-21 (+7d) | 2027-07-12 → 2027-07-19 (+7d) |  |
| INF | **Infrastructure Networks** | 2027-06-19 → 2027-06-26 (+7d) | 2027-07-07 → 2027-07-14 (+7d) |  |
| LV | **Low Voltage Network** | 2027-06-24 → 2027-07-01 (+7d) | 2027-07-07 → 2027-07-14 (+7d) |  |
| TC-LV-100 | Testing and Commissioning of Low Voltage Network | 2027-06-24 → 2027-07-01 (+7d) | 2027-07-07 → 2027-07-14 (+7d) |  |
| PW1 | **Irrigation Network** | 2027-06-24 → 2027-07-01 (+7d) | 2027-07-07 → 2027-07-14 (+7d) |  |
| T/C-IR | Testing and Commissioning of Irrigation Network | 2027-06-24 → 2027-07-01 (+7d) | 2027-07-07 → 2027-07-14 (+7d) |  |
| PW11 | **TSE Network** | 2027-06-24 → 2027-07-01 (+7d) | 2027-07-07 → 2027-07-14 (+7d) |  |
| T/C-TSE-10 | Testing and Commissioning of TSE Network | 2027-06-24 → 2027-07-01 (+7d) | 2027-07-07 → 2027-07-14 (+7d) |  |
| PW | **Potable Water Network** | 2027-06-24 → 2027-07-01 (+7d) | 2027-07-07 → 2027-07-14 (+7d) |  |
| T/C-PW | Testing and Commissioning of Potable Water Network | 2027-06-24 → 2027-07-01 (+7d) | 2027-07-07 → 2027-07-14 (+7d) |  |
| SW | **Sewage Network** | 2027-06-24 → 2027-07-01 (+7d) | 2027-07-07 → 2027-07-14 (+7d) |  |
| T/C-SW | Testing and Commissioning of Sewage Network | 2027-06-24 → 2027-07-01 (+7d) | 2027-07-07 → 2027-07-14 (+7d) |  |
| SD | **Storm Drainage Network** | 2027-06-24 → 2027-07-01 (+7d) | 2027-07-07 → 2027-07-14 (+7d) |  |
| T/C-DPO | Testing and Commissioning of Storm Drainage Ponds | 2027-06-24 → 2027-07-01 (+7d) | 2027-07-07 → 2027-07-14 (+7d) |  |
| T/C-SD | Testing and Commissioning of Storm Drainage Ponds and Storm Drainage Network | 2027-06-24 → 2027-07-01 (+7d) | 2027-07-07 → 2027-07-14 (+7d) |  |
| SL | **Street Lighting Network** | 2027-06-19 → 2027-06-26 (+7d) | 2027-07-01 → 2027-07-08 (+7d) |  |
| T/C-SL | Testing and Commissioning of Street Lighting Network | 2027-06-19 → 2027-06-26 (+7d) | 2027-07-01 → 2027-07-08 (+7d) |  |
| TE | **Telecom and Light Current Network** | 2027-06-19 → 2027-06-26 (+7d) | 2027-07-01 → 2027-07-08 (+7d) |  |
| T/C-TE | Testing and Commissioning of Telecom and Light Current Networks | 2027-06-19 → 2027-06-26 (+7d) | 2027-07-01 → 2027-07-08 (+7d) |  |
| MV | **Medium Voltage Network** | 2027-06-19 → 2027-06-26 (+7d) | 2027-07-01 → 2027-07-08 (+7d) |  |
| T/C-MV | Testing and Commissioning of Medium Voltage Network | 2027-06-19 → 2027-06-26 (+7d) | 2027-07-01 → 2027-07-08 (+7d) |  |
| RD | **Road Works** | 2027-06-19 → 2027-06-26 (+7d) | 2027-07-01 → 2027-07-08 (+7d) |  |
| T/C-RD | Testing and Commissioning of Road Works | 2027-06-19 → 2027-06-26 (+7d) | 2027-07-01 → 2027-07-08 (+7d) |  |
| 1 | **Utility Buildings** | 2027-06-14 → 2027-06-21 (+7d) | 2027-07-12 → 2027-07-19 (+7d) |  |
| T/C-CTV | Testing and Commissioning of Guard Room and Boundary Fence | 2027-06-14 → 2027-06-21 (+7d) | 2027-07-01 → 2027-07-08 (+7d) |  |
| T/C-CTV20 | Testing and Commissioning of Softscape And Planting | 2027-06-16 → 2027-06-23 (+7d) | 2027-07-04 → 2027-07-11 (+7d) |  |
| T/C-CTV10 | Testing and Commissioning of Utility Buildings | 2027-06-24 → 2027-07-01 (+7d) | 2027-07-12 → 2027-07-19 (+7d) | resources 30A, 3P AC Disconnect Switch; 60A, 3P AC Disconnect Switch; 20A Duplex Receptacle Floor Mounted; Single gang Lighting switch; Double gang Lighting switch; 2way Single gang Lighting switch; Cable Tray 300 mm X 100 mm; 4CX6 Cu. XLPE FRLSZH Cable; 4CX10 Cu. XLPE FRLSZH Cable; 4CX16 Cu. XLPE FRLSZH Cable; 4CX25 Cu. XLPE FRLSZH Cable; 4CX35 Cu. XLPE FRLSZH Cable; 4CX185 Cu. XLPE FRLSZH Cable; 120mm2 Tinned copper wire; Grounding rod 20mmX3m; Grounding rod with Pit 20mmX3m; Earthing Bar; Cu earth strip 25X4 mm; 1.5m Air terminal; 4mm2 Cu./FRLSZH Cable; 6mm2 Cu./FRLSZH Cable; 10mm2 Cu./FRLSZH Cable; 16mm2 Cu./FRLSZH Cable; 95mm2 Cu./FRLSZH Cable; 120mm2 Cu./FRLSZH Cable; 30KVA, 400V, 3PH, 60Hz UPS; CB-UPS-01 panel; Supply, install and connection of a SCADA server cum workstation complete with network rack, network switch, sensors, printer, armoured cables with cable tray & conduits, level transmitter, liquid flow meter, quality sensor (COD,BOD,pH), pressure transmit; Fire Alarm Control panel with fire alarm zoning with Mimic panel with fire alarm zoning; Supply, install to site and installation of the Aspirating Smoke Detector complete with accessories and pipes; Supply, install to site and installation of the addressable manual call point with operation safety glass breaking and pushbutton; Supply, install to site and installation of the photoelectric smoke detector with base; Supply, install to site and installation of the heat detector with base; Supply, install to site and installation of multi criteria sensors with base; Supply, install to site and installation of Hydrogen detector; Supply, install to site and installation of Duct detector; Sounder With Beacon; Remote LED Indicator; Single Channel Interface Module; Addressable Control module for Sounders; Addressable relay module for interface; Addressable monitor module for interface; Supply, install to site and installation Fire loop cable; Supply, install to site and installation of power cable; Fire Fighter’s Telephone Centre; Fireman’s Telephone Jack; Voice Command Center; DACT (Auto - Dailer) for 24x7 Civil Defence; Transmission Communication cable - Fiber Optics; Transmission Communication cable - Ethernet Cable; Supply, install to site and installation of power supply system for fire alarm control panel; Pump Set for Irrigation Supply (IRR01 / IRR02); Pump Set for Drainage System; Pump Set for SW Force Main (1W+1S); Pump Set for FF Supply (FP01.FP02); Pump Set for Domestic Supply (BP01 / BP02); acoustical tiles suspended ceiling 600x600mm concealed metal; 100 mm thickness lean concrete under the foundation; Foundation; Grade Beams; Slab on grade; Walls; Beams; Slabs; Lightweight Concrete Roof insulation as per Architect's specification; Hollow Concrete masonry unit, 100 mm thick wall for internal block; Hollow Concrete masonry unit, 150 mm thick wall for internal block; Insulated brickwork. with expanded polystyrene 200mm thick for External block; Hollow Concrete masonry unit, 300 mm thick wall for External block; 2 perpendicular layers of cold bitumen coats; 2 layer of 4mm HDPE membrane, 2 perpendicular layers cold bitumen coats; 1 layer EPOXY Paint 300 micron; Membrane fully bonded to prime deck and upstand; Geotextile Filter membrane uv resistance; 85mm thick thermal insulation; 1.5mm thick epdm waterproofing membrane; D1 - 1100 mm width x 2200 mm height; D2 - 1070 mm width x 2225 mm height; D3 - 1200 mm width x 3000 mm height; D4 - 1800 mm width x 3000 mm height; Roller Shuter - 3000mm width x 4000mm height; D1' 1900mm width x 2950mm height; D2' 1200mm width x 2150mm height; D3' 800mm width x 2050mm height; D4' 1700mm width x 2050mm height; 1500 mm width x 1200 mm high (W01); 1200 mm width x 1200 mm high (W02); 1000 mm width x 2400 mm high (L1); Supply and install External plastering to walls and columns min. 15mm thick with cement mortar of specified grade including galvanized mesh, corner beads, angle beads, CE bonds to rough and smooth plaster complete the work as per drawing & specification.; Supply and install 2 coats of weatherproof paint at walls including one prime coat and two coats and putty to give smooth Surface as a base for paint including fiberglass tape to joints and all other accessories as per manufacturers approved specification; Supply and install internal plastering to walls and columns min. 15mm thick with cement mortar of specified grade including galvanized mesh, corner beads, angle beads, CE bonds to rough and smooth plaster complete the work as per drawing & specification.; Supply and install 2 coats of epoxy paint at walls including one prime coat and two coats and putty to give smooth Surface as a base for paint including fiberglass tape to joints and all other accessories as per manufacturers approved specification; Supply and install 300*300mm glazed ceramic wall tiles on cement mortar and including rough and smooth plaster, galvanized mesh, corner beads, angle beads, CE bonds; Acid Proof Tiles; Supply and install 600*600mm porcelain tiles with approved quality on 30 mm mortar including sand fill material as approved by the Client; Supply and install 12.5mm thk, gypsum board suspended ceiling including suspension system, paints as required specification and material as approved by the Client including frames supports, access openings and all other accessories to complete as shown in; 4.5 KG CO2 Type Fire Extinguishers; 6 KG ABC Type Fire Extinguishers; 15 mm dia.; 25 mm dia.; 32 mm dia.; 40 mm dia.; 80 mm dia.; 200 mm dia.; 250 mm dia.; Supply and installation of western water closet, flush tank type, heavy duty, one piece SASO certified, approval of client, dimesion not less than 40 cm width, 68 cm length including all other accessories as per drawings and specification; Supply and installation of urinal, heavy duty, one piece SASO certified, approval of client, including all other accessories as per drawings and specification; Supply and installation of Bib tap with Perenial Hose (BPH) with stainless steel flexible hose and cast brass chromeplated hand including all other accessories to complete as per drawing and specification.; Supply, installation, testing and commissioning of Lavatory / wash basin with counter for toilets, built in soap dispenser, mixer, single lever arm including all accessories as per drawings and specification and to the approval of the client; Provide and install paper towel dispenser, surface mounted, satin finish stainless steel as per approved sample including accessories.; Provide and install mirror as per approved sample including frames, backing and all accessories to complete.; Provide and install towel ring, surface mounted, satin finish stainless steel as per approved sample including accessories.; Hose Bib; Valve Chamber; Retarding Chamber; Inspection Chamber; Neutralization pit 1000x1000mm; 25mm diameter; 32mm diameter; 40mm diameter; 50mm diameter; 75mm diameter; 80mm diameter; 100mm diameter; 110mm diameter; 15mm diameter; 20mm diameter; 150mm diameter; 200mm diameter; 250mm diameter; 13mm diameter; Gully Trap; Floor drain 75mm; Floor cleanout 110mm; Roof drain; 20 mm; 25 mm; 32 mm; 40 mm; 50 mm; 100 mm; 150 mm; 200 mm; 250 mm; Altitude control valve assembly, size 200 mm; GRP water tanks capacity of each 1000 liter complete with all fittings, all valves and concrete pad; Water Heater 30ltr; Supply, install, connection, testing and commssionigs horizontal bladder type pressure tank with capacity 1500 liter according to manufacturer's detail and specification - PS-PT-1; Supply, install, connection, testing and commssionigs horizontal bladder type pressure tank with capacity 300 liter according to manufacturer's detail and specification - PS-PT-2; Chemical DosingTank (CDT) 6000 liters capacity polytheylene tank With pump assembly.; Actual capacity 1.0 Ton; Actual capacity 1.5 Ton; Actual capacity 2.0 Ton; Air Flow 280 l/s @ 150 pa; Air Flow 3200 l/s @ 100 pa; Air Flow 110 l/s @ 50 pa; Air Flow 70 l/s @ 50 pa; Air Flow 35 l/s @ 35 pa; Air Flow 105 l/s @ 50 pa; Air Flow 180 l/s @ 0.01 pa; Supply and install flexible duct with insulation; size 8 inch dia.; Supply and install flexible duct with insulation; size 10 inch dia.; Package Unit 57.4 kW "thermal"; Variable Air Volume (VAV 01); Variable Air Volume (VAV 02); Variable Air Volume (VAV 03); Variable Air Volume (VAV 04); Variable Air Volume (VAV 05); Variable Air Volume (VAV 06); Galvanized sheet metal ducts; Supply Liner Slot diffuser 3 slots 1 inch; Return Liner Slot diffuser 3 slots 1 inch; Exhaust Grill 150mm x 150mm; Exhast Air fan 515 l/s @ 150 pa; Exhast Air fan 3200 l/s @ 100 pa; Sand trap louver 2400mm x 1000mm; Sound attenuator size 1050 x 650 x 1000 m; Fire suppression system FM200 57 kg fill capacity consists of 2 cylinders, duty + standby, complete with all required mechanical, electrical , and control items to install, test, and operate the system.; Fire suppression system NOVEC 1230 134.1 kg fill capacity consists of 2 cylinders, duty + standby, complete with all required mechanical, electrical , and control items to install, test, and operate the system.; Fire suppression system NOVEC 1230 29.2 kg fill capacity consists of 2 cylinders, duty + standby, complete with all required mechanical, electrical , and control items to install, test, and operate the system.; Fire suppression system NOVEC 1230 53.5 kg fill capacity consists of 2 cylinders, duty + standby, complete with all required mechanical, electrical , and control items to install, test, and operate the system.; Fire suppression system NOVEC 1230 82.3 kg fill capacity consists of 2 cylinders, duty + standby, complete with all required mechanical, electrical , and control items to install, test, and operate the system.; Fire suppression system NOVEC 1230 42.5 kg fill capacity consists of 2 cylinders, duty + standby, complete with all required mechanical, electrical , and control items to install, test, and operate the system.; Supply and install steel ladder with cage at pump room for as per drawings and specification.; Overhead Travelling Crane; lifting capacity 1.50 ton manual type all to manufacturer's detail and specifications. - PS-OC-1; Hot dipped Galvanized steel Trench Grating; Hot dipped Galvanized steel Channel Cover Plate; Steel Frame and Cover 1200 x 1200; Vent Cowl (Standard Size); Steel Handrail of 1.2m height; 30W LED linear Pendant lighting; 30W LED Emergency linear Pendant lighting; 47W LED linear Pendant lighting; 47W LED Emergency linear Pendant lighting; 13W recess mounted LED down light fitting; 13W recess emergency mounted LED down light fitting with 1.5 Hr Battery; 10.4W LED Exit light with 1.5 Hr Battery; Distribution board (MDB-PR-01); Distribution board (LPDB-PR-01); Distribution board (MDB-CB-01); Distribution board (LPDB-CR-01); 13A,1? 230V Twin socket outlet with switch; 13A,1? 230V Industrial socket outlet with switch; 13A, Twin Socket outlet, Weather Proof; 400A, 3P Disconnect switch; 30A, 2P AC Disconnect Switch → 100 mm thickness lean concrete under the foundation; Foundation; Grade Beams; Slab on grade; Walls; Beams; Slabs; Lightweight Concrete Roof insulation as per Architect's specification; Hollow Concrete masonry unit, 100 mm thick wall for internal block; Hollow Concrete masonry unit, 150 mm thick wall for internal block; Insulated brickwork. with expanded polystyrene 200mm thick for External block; Hollow Concrete masonry unit, 300 mm thick wall for External block; 2 perpendicular layers of cold bitumen coats; 2 layer of 4mm HDPE membrane, 2 perpendicular layers cold bitumen coats; 1 layer EPOXY Paint 300 micron; Membrane fully bonded to prime deck and upstand; Geotextile Filter membrane uv resistance; 85mm thick thermal insulation; 1.5mm thick epdm waterproofing membrane; D1 - 1100 mm width x 2200 mm height; D2 - 1070 mm width x 2225 mm height; D3 - 1200 mm width x 3000 mm height; D4 - 1800 mm width x 3000 mm height; Roller Shuter - 3000mm width x 4000mm height; D1' 1900mm width x 2950mm height; D2' 1200mm width x 2150mm height; D3' 800mm width x 2050mm height; D4' 1700mm width x 2050mm height; 1500 mm width x 1200 mm high (W01); 1200 mm width x 1200 mm high (W02); 1000 mm width x 2400 mm high (L1); Supply and install External plastering to walls and columns min. 15mm thick with cement mortar of specified grade including galvanized mesh, corner beads, angle beads, CE bonds to rough and smooth plaster complete the work as per drawing & specification.; Supply and install 2 coats of weatherproof paint at walls including one prime coat and two coats and putty to give smooth Surface as a base for paint including fiberglass tape to joints and all other accessories as per manufacturers approved specification; Supply and install internal plastering to walls and columns min. 15mm thick with cement mortar of specified grade including galvanized mesh, corner beads, angle beads, CE bonds to rough and smooth plaster complete the work as per drawing & specification.; Supply and install 2 coats of epoxy paint at walls including one prime coat and two coats and putty to give smooth Surface as a base for paint including fiberglass tape to joints and all other accessories as per manufacturers approved specification; Supply and install 300*300mm glazed ceramic wall tiles on cement mortar and including rough and smooth plaster, galvanized mesh, corner beads, angle beads, CE bonds; Acid Proof Tiles; Supply and install 600*600mm porcelain tiles with approved quality on 30 mm mortar including sand fill material as approved by the Client; Supply and install 12.5mm thk, gypsum board suspended ceiling including suspension system, paints as required specification and material as approved by the Client including frames supports, access openings and all other accessories to complete as shown in; 4.5 KG CO2 Type Fire Extinguishers; 6 KG ABC Type Fire Extinguishers; 15 mm dia.; 25 mm dia.; 32 mm dia.; 40 mm dia.; 80 mm dia.; 200 mm dia.; 250 mm dia.; Supply and installation of western water closet, flush tank type, heavy duty, one piece SASO certified, approval of client, dimesion not less than 40 cm width, 68 cm length including all other accessories as per drawings and specification; Supply and installation of urinal, heavy duty, one piece SASO certified, approval of client, including all other accessories as per drawings and specification; Supply and installation of Bib tap with Perenial Hose (BPH) with stainless steel flexible hose and cast brass chromeplated hand including all other accessories to complete as per drawing and specification.; Supply, installation, testing and commissioning of Lavatory / wash basin with counter for toilets, built in soap dispenser, mixer, single lever arm including all accessories as per drawings and specification and to the approval of the client; Provide and install paper towel dispenser, surface mounted, satin finish stainless steel as per approved sample including accessories.; Provide and install mirror as per approved sample including frames, backing and all accessories to complete.; Provide and install towel ring, surface mounted, satin finish stainless steel as per approved sample including accessories.; Hose Bib; Valve Chamber; Retarding Chamber; Inspection Chamber; Neutralization pit 1000x1000mm; 25mm diameter; 32mm diameter; 40mm diameter; 50mm diameter; 75mm diameter; 80mm diameter; 100mm diameter; 110mm diameter; 15mm diameter; 20mm diameter; 150mm diameter; 200mm diameter; 250mm diameter; 13mm diameter; Gully Trap; Floor drain 75mm; Floor cleanout 110mm; Roof drain; 20 mm; 25 mm; 32 mm; 40 mm; 50 mm; 100 mm; 150 mm; 200 mm; 250 mm; Altitude control valve assembly, size 200 mm; GRP water tanks capacity of each 1000 liter complete with all fittings, all valves and concrete pad; Water Heater 30ltr; Supply, install, connection, testing and commssionigs horizontal bladder type pressure tank with capacity 1500 liter according to manufacturer's detail and specification - PS-PT-1; Supply, install, connection, testing and commssionigs horizontal bladder type pressure tank with capacity 300 liter according to manufacturer's detail and specification - PS-PT-2; Chemical DosingTank (CDT) 6000 liters capacity polytheylene tank With pump assembly.; Actual capacity 1.0 Ton; Actual capacity 1.5 Ton; Actual capacity 2.0 Ton; Air Flow 280 l/s @ 150 pa; Air Flow 3200 l/s @ 100 pa; Air Flow 110 l/s @ 50 pa; Air Flow 70 l/s @ 50 pa; Air Flow 35 l/s @ 35 pa; Air Flow 105 l/s @ 50 pa; Air Flow 180 l/s @ 0.01 pa; Supply and install flexible duct with insulation; size 8 inch dia.; Supply and install flexible duct with insulation; size 10 inch dia.; Package Unit 57.4 kW "thermal"; Variable Air Volume (VAV 01); Variable Air Volume (VAV 02); Variable Air Volume (VAV 03); Variable Air Volume (VAV 04); Variable Air Volume (VAV 05); Variable Air Volume (VAV 06); Galvanized sheet metal ducts; Supply Liner Slot diffuser 3 slots 1 inch; Return Liner Slot diffuser 3 slots 1 inch; Exhaust Grill 150mm x 150mm; Exhast Air fan 515 l/s @ 150 pa; Exhast Air fan 3200 l/s @ 100 pa; Sand trap louver 2400mm x 1000mm; Sound attenuator size 1050 x 650 x 1000 m; Fire suppression system FM200 57 kg fill capacity consists of 2 cylinders, duty + standby, complete with all required mechanical, electrical , and control items to install, test, and operate the system.; Fire suppression system NOVEC 1230 134.1 kg fill capacity consists of 2 cylinders, duty + standby, complete with all required mechanical, electrical , and control items to install, test, and operate the system.; Fire suppression system NOVEC 1230 29.2 kg fill capacity consists of 2 cylinders, duty + standby, complete with all required mechanical, electrical , and control items to install, test, and operate the system.; Fire suppression system NOVEC 1230 53.5 kg fill capacity consists of 2 cylinders, duty + standby, complete with all required mechanical, electrical , and control items to install, test, and operate the system.; Fire suppression system NOVEC 1230 82.3 kg fill capacity consists of 2 cylinders, duty + standby, complete with all required mechanical, electrical , and control items to install, test, and operate the system.; Fire suppression system NOVEC 1230 42.5 kg fill capacity consists of 2 cylinders, duty + standby, complete with all required mechanical, electrical , and control items to install, test, and operate the system.; Supply and install steel ladder with cage at pump room for as per drawings and specification.; Overhead Travelling Crane; lifting capacity 1.50 ton manual type all to manufacturer's detail and specifications. - PS-OC-1; Hot dipped Galvanized steel Trench Grating; Hot dipped Galvanized steel Channel Cover Plate; Steel Frame and Cover 1200 x 1200; Vent Cowl (Standard Size); Steel Handrail of 1.2m height; 30W LED linear Pendant lighting; 30W LED Emergency linear Pendant lighting; 47W LED linear Pendant lighting; 47W LED Emergency linear Pendant lighting; 13W recess mounted LED down light fitting; 13W recess emergency mounted LED down light fitting with 1.5 Hr Battery; 10.4W LED Exit light with 1.5 Hr Battery; Distribution board (MDB-PR-01); Distribution board (LPDB-PR-01); Distribution board (MDB-CB-01); Distribution board (LPDB-CR-01); 13A,1? 230V Twin socket outlet with switch; 13A,1? 230V Industrial socket outlet with switch; 13A, Twin Socket outlet, Weather Proof; 400A, 3P Disconnect switch; 30A, 2P AC Disconnect Switch; 30A, 3P AC Disconnect Switch; 60A, 3P AC Disconnect Switch; 20A Duplex Receptacle Floor Mounted; Single gang Lighting switch; Double gang Lighting switch; 2way Single gang Lighting switch; Cable Tray 300 mm X 100 mm; 4CX6 Cu. XLPE FRLSZH Cable; 4CX10 Cu. XLPE FRLSZH Cable; 4CX16 Cu. XLPE FRLSZH Cable; 4CX25 Cu. XLPE FRLSZH Cable; 4CX35 Cu. XLPE FRLSZH Cable; 4CX185 Cu. XLPE FRLSZH Cable; 120mm2 Tinned copper wire; Grounding rod 20mmX3m; Grounding rod with Pit 20mmX3m; Earthing Bar; Cu earth strip 25X4 mm; 1.5m Air terminal; 4mm2 Cu./FRLSZH Cable; 6mm2 Cu./FRLSZH Cable; 10mm2 Cu./FRLSZH Cable; 16mm2 Cu./FRLSZH Cable; 95mm2 Cu./FRLSZH Cable; 120mm2 Cu./FRLSZH Cable; 30KVA, 400V, 3PH, 60Hz UPS; CB-UPS-01 panel; Supply, install and connection of a SCADA server cum workstation complete with network rack, network switch, sensors, printer, armoured cables with cable tray & conduits, level transmitter, liquid flow meter, quality sensor (COD,BOD,pH), pressure transmit; Fire Alarm Control panel with fire alarm zoning with Mimic panel with fire alarm zoning; Supply, install to site and installation of the Aspirating Smoke Detector complete with accessories and pipes; Supply, install to site and installation of the addressable manual call point with operation safety glass breaking and pushbutton; Supply, install to site and installation of the photoelectric smoke detector with base; Supply, install to site and installation of the heat detector with base; Supply, install to site and installation of multi criteria sensors with base; Supply, install to site and installation of Hydrogen detector; Supply, install to site and installation of Duct detector; Sounder With Beacon; Remote LED Indicator; Single Channel Interface Module; Addressable Control module for Sounders; Addressable relay module for interface; Addressable monitor module for interface; Supply, install to site and installation Fire loop cable; Supply, install to site and installation of power cable; Fire Fighter’s Telephone Centre; Fireman’s Telephone Jack; Voice Command Center; DACT (Auto - Dailer) for 24x7 Civil Defence; Transmission Communication cable - Fiber Optics; Transmission Communication cable - Ethernet Cable; Supply, install to site and installation of power supply system for fire alarm control panel; Pump Set for Irrigation Supply (IRR01 / IRR02); Pump Set for Drainage System; Pump Set for SW Force Main (1W+1S); Pump Set for FF Supply (FP01.FP02); Pump Set for Domestic Supply (BP01 / BP02); acoustical tiles suspended ceiling 600x600mm concealed metal |
| 1 | **Handing over and close out** | 2027-06-19 → 2027-06-26 (+7d) | 2027-07-15 → 2027-07-22 (+7d) |  |
| 2 | **As-Built** | 2027-06-19 → 2027-06-26 (+7d) | 2027-07-15 → 2027-07-22 (+7d) |  |
| HO-140 | Submission As-Built Drawing For Roads Network | 2027-06-19 → 2027-06-26 (+7d) | 2027-06-29 → 2027-07-06 (+7d) |  |
| HO-150 | Submission As-Built Drawing For Street Lighting Network | 2027-06-19 → 2027-06-26 (+7d) | 2027-06-29 → 2027-07-06 (+7d) |  |
| HO-160 | Submission As-Built Drawing For Telecom and Light Current Networks | 2027-06-19 → 2027-06-26 (+7d) | 2027-06-29 → 2027-07-06 (+7d) |  |
| HO-100 | Submission As-Built Drawing For Sewage Network | 2027-06-24 → 2027-07-01 (+7d) | 2027-07-05 → 2027-07-12 (+7d) |  |
| HO-130 | Submission As-Built Drawing For Pond | 2027-06-24 → 2027-07-01 (+7d) | 2027-07-05 → 2027-07-12 (+7d) |  |

| ID | Task | Start | Finish |
| --- | --- | --- | --- |
| HO-180 | Submission As-Built Drawing For Irrigation Network | 2027-06-24 → 2027-07-01 (+7d) | 2027-07-05 → 2027-07-12 (+7d) |
| HO-200 | Submission As-Built Drawing For Storm Network | 2027-06-24 → 2027-07-01 (+7d) | 2027-07-05 → 2027-07-12 (+7d) |
| HO-210 | Submission As-Built Drawing For Utility Buildings | 2027-07-04 → 2027-07-11 (+7d) | 2027-07-12 → 2027-07-19 (+7d) |
| HO-170 | Submission As-Built Drawing For Medium Voltage Network | 2027-07-08 → 2027-07-15 (+7d) | 2027-07-15 → 2027-07-22 (+7d) |
| HO-190 | As-Built Drawing For Potable Water Network | 2027-07-08 → 2027-07-15 (+7d) | 2027-07-15 → 2027-07-22 (+7d) |
| 1 | **De-Mobilization Works** | 2027-06-21 → 2027-06-28 (+7d) | 2027-07-11 → 2027-07-18 (+7d) |
| HO-230 | Remove Temporary Car Shades | 2027-06-21 → 2027-06-28 (+7d) | 2027-07-01 → 2027-07-08 (+7d) |
| HO-220 | Removing Portable Caravan | 2027-06-24 → 2027-07-01 (+7d) | 2027-07-01 → 2027-07-08 (+7d) |
| HO-120 | Remove material stock & Storage area | 2027-07-03 → 2027-07-10 (+7d) | 2027-07-11 → 2027-07-18 (+7d) |
| 3 | **Handing Over** | 2027-06-23 → 2027-06-30 (+7d) | 2027-07-15 → 2027-07-22 (+7d) |
| HO-240 | Final Walkthrough and Inspection | 2027-06-23 → 2027-06-30 (+7d) | 2027-07-01 → 2027-07-08 (+7d) |
| HO-250 | Review B.O.Q Qty. to ensure compliance with the actual status | 2027-06-23 → 2027-06-30 (+7d) | 2027-07-01 → 2027-07-08 (+7d) |
| HO-260 | Review FIR Approval to ensure compliance with the actual status | 2027-06-23 → 2027-06-30 (+7d) | 2027-07-01 → 2027-07-08 (+7d) |
| HO-270 | Review the sample drawing to ensure compliance with the actual status | 2027-06-23 → 2027-06-30 (+7d) | 2027-07-01 → 2027-07-08 (+7d) |
| HO-280 | Punch List Completion | 2027-07-03 → 2027-07-10 (+7d) | 2027-07-11 → 2027-07-18 (+7d) |
| HO-110 | Final Testing Work | 2027-07-08 → 2027-07-15 (+7d) | 2027-07-15 → 2027-07-22 (+7d) |
