# Development of the Technology City in Dhahran Project Recovery -REV.00-2-11

How a schedule from Primavera P6 changed from version to version. A marks actual dates.

## Version 5 (data date 2026-11-02, saved 2026-11-04, file DHRT-01-001-BL00.R01-3-11.xer)

Note of the change: Renumber project folders 01–23 in order (after removing projects 12 and 25)

| ID | WBS | Task | Duration | Start | Finish | Predecessors | Complete |
| --- | --- | --- | --- | --- | --- | --- | --- |
|  | MS | **Key Milestones** |  | 2026-01-06 | 2027-07-22 |  |  |
|  | CM | **Contractual Milestones** |  | 2026-01-06 | 2027-07-22 |  |  |
| MS-CS-PS |  | Project Commencement Date ( Site Handover ) | 0d | 2026-01-06 A | 2026-01-06 A |  | 100% |
| MS-CF-EBL |  | Completion of Execution Plan and Baseline Schedule | 0d | 2026-02-05 A | 2026-02-05 A | PRE-CON-MDC-20 SS, PRE-CON-MDC-20 FF, PRE-CON-MDC-10 FF | 100% |
| MS-CF-MOB |  | Completion of Mobilization Works | 0d | 2026-03-07 A | 2026-03-07 A | MOB-30 SS, MOB-30 FF, MOB-80 FF, MOB-40 FF, MOB-50 FF, MOB-60 FF, MOB-10 FF, MOB-70 FF, PRE-CON-MDC-10 FF, PRE-CON-MDC-20 FF, PRE-CON-MDC-30 FF, PRE-CON-MDC-40 FF, PRE-CON-MDC-50 FF, PRE-CON-MDC-60 FF, PRE-CON-MDC-70 FF, PRE-CON-MDC-80 FF | 100% |
| MS-CF-ENG |  | Completion of Submitting and Approval of Shopdrawing and Materials | 0d | 2026-11-29 | 2026-11-29 | PRE-CON-MDC-30 SS, PRE-CON-MDC-30 FF, PRE-CON-MDC-40 FF, PRE-CON-MDC-50 FF, PRE-CON-MDC-60 FF, PRE-CON-MDC-70 FF, PRE-CON-MDC-80 FF, ENG-SH-RD-A-100 FF, ENG-SH-RD-A-110 FF, ENG-SH-HS-A-110 FF, ENG-SH-MRK-A-110 FF, ENG-SH-TSB-A-100 FF, ENG-SH-SD-ML-A-110 FF, ENG-SH-SD-CB-A-110 FF, ENG-SH-DPO-A-120 FF, ENG-SH-SW-ML-A-110 FF, ENG-SH-TSE-ML-A-120 FF, ENG-SH-PW-ML-A-110 FF, ENG-SH-PW-FH-A-110 FF, ENG-SH-IR-ML-A-110 FF, ENG-SH-MV-A-110 FF, ENG-SH-LV-A-120 FF, ENG-SH-SL-A-110 FF, ENG-SH-CTV-A-110 FF, ENG-SH-MSN-A-120 FF, ENG-SH-TE-A-110 FF, ENG-SH-LS-A-170 FF, ENG-SH-ST-A-180 FF, ENG-SH-ST-A-190 FF, ENG-SH-SPS-A-160 FF, ENG-SH-GR-A-190 FF, ENG-SH-GR-A-200 FF, ENG-MS-SD-ML-A-110 FF, ENG-MS-SD-CB-A-110 FF, ENG-MS-DPO-A-130 FF, ENG-MS-SW-ML-A-110 FF, ENG-MS-TSE-ML-A-120 FF, ENG-MS-PW-ML-A-110 FF, ENG-MS-IR-ML-A-110 FF, ENG-MS-MV-A-110 FF, ENG-MS-MV-A-120 FF, ENG-MS-SL-A-110 FF, ENG-MS-CTV-A-110 FF, ENG-MS-TE-A-110 FF, ENG-MS-RD-A-10 FF, ENG-MS-RD-A-20 FF, ENG-MS-RD-A-30 FF, ENG-MS-RD-A-40 FF, ENG-MS-HS-A-10 FF, ENG-MS-MRK-A-10 FF, ENG-MS-TSB-A-10 FF, ENG-MS-LS-A-180 FF, ENG-MS-ST-A-190 FF, ENG-MS-ST-A-200 FF, ENG-MS-SPS-A-170 FF, ENG-MS-GR-A-210 FF, ENG-MS-GR-A-220 FF, ENG-MT-SD-ML-A-100 FF, ENG-MT-SD-ML-A-110 FF, ENG-MT-SD-CB-A-100 FF, ENG-MT-SD-CB-A-110 FF, ENG-MT-DPO-CV-A-110 FF, ENG-MT-SD-TF-A-100 FF, ENG-MT-SD-TF-A-110 FF, ENG-MT-SW-ML-A-100 FF, ENG-MT-SW-ML-A-110 FF, ENG-MT-SW-TF-A-100 FF, ENG-MT-IR-ML-A-120 FF, ENG-MT-PW-ML-A-100 FF, ENG-MT-PW-ML-A-110 FF, ENG-MT-PW-FH-A-100 FF, ENG-MT-PW-TF-A-100 FF, ENG-MT-IR-ML-A-100 FF, ENG-MT-IR-ML-A-110 FF, ENG-MT-MV-ML-A-100 FF, PRO-LV-ML-A-100 FF, PRO-LV-HC-A-100 FF, PRO-LV-DP-A-100 FF, PRO-LV-DP-A-110 FF, PRO-LV-TT-A-100 FF, ENG-MT-SL-ML-A-100 FF, ENG-MT-SL-A-100 FF, ENG-MT-SL-A-110 FF, ENG-MT-SL-A-120 FF, ENG-MT-SL-DB-A-100 FF, ENG-MT-SL-TF-A-100 FF, ENG-MT-SL-TF-A-110 FF, ENG-MT-SL-ES-A-100 FF, ENG-MT-TE-A-100 FF, ENG-MT-TE-A-110 FF, ENG-MT-CTV-A-100 FF, ENG-MT-RD-A-100 FF, ENG-MT-RD-A-110 FF, ENG-MT-RD-A-120 FF, ENG-MT-RD-A-130 FF, ENG-MT-RD-A-160 FF, ENG-MT-RD-A-170 FF, ENG-MT-RD-A-140 FF, ENG-MT-RD-A-150 FF, ENG-MT-TS-A-100 FF, ENG-MT-TS-A-110 FF, ENG-MT-IR-ML-A-140 FF, ENG-MT-IR-ML-A-150 FF, ENG-MT-SLS-CV-A-110 FF, ENG-MT-TSE-CV-A-140 FF, ENG-MT-TSE-CV-A-150 FF, ENG-MT-PS-CV-A-150 FF, ENG-MT-GR-CV-A-130 FF, ENG-MT-FE-CV-A-120 FF, ENG-MT-SPS-MC-A-110 FF, ENG-MT-TSE-MC-A-120 FF |  |
| MS-CF-SW |  | Completion of Construction Works for Sewage Network | 0d | 2027-03-15 | 2027-03-15 | CO-SW-MH-300 FF, PRO-R25-RD-DL-110 FF, PRO-RD-1DL-110 FF, CO-EW-220 FF, CO-SW-ML-190 FF, PRO-SW-1DL-110 FF, PRO-R25-SW-DL-110 FF, ENG-MT-SW-ML-A-100 FF, ENG-SH-SW-ML-A-110 FF, CO-EW-200 FF, ENG-MS-SW-ML-A-110 FF, PRO-R25-SD-DL-110 FF, PRO-R25-SD-DL-130 FF, PRO-SD-1DL-130 FF, PRO-SD-1DL-120 FF, ENG-MT-SD-CB-A-110 FF, ENG-SH-SD-CB-A-110 FF, ENG-MS-SD-CB-A-110 FF, PRO-SW-1DL-100 FF, PRO-R25-SW-DL-100 FF, ENG-MT-SW-ML-A-110 FF, CO-SW-MH-240 FF, CO-SW-MH-230 FF, CO-SW-MH-220 FF, CO-EW-240 FF, CO-SW-MH-210 FF, CO-SW-ML-150 FF, CO-SW-ML-140 FF, CO-EW-230 FF, PRO-SD-1DL-100 FF, PRO-R25-SD-DL-100 FF, ENG-MT-SD-ML-A-100 FF, ENG-MS-SD-ML-A-110 FF, ENG-MT-SD-ML-A-110 FF, ENG-SH-SD-ML-A-110 FF, PRO-LV-DP-1DL-100 FF, ENG-SH-MSN-A-120 FF, ENG-SH-CTV-A-110 FF, ENG-MS-CTV-A-110 FF, ENG-MT-CTV-A-100 FF, PRO-R25-SW-DL-120 SS, PRO-R25-SW-DL-120 FF, PRO-SW-1DL-120 FF, CO-SW-MH-250 FF, PRO-RD-1DL-130 FF, PRO-R25-RD-DL-100 FF, PRO-RD-1DL-100 FF, MS-MM-140 FF, MS-MM-130 FF, ENG-SH-RD-A-100 FF, ENG-SH-RD-A-110 FF, ENG-MS-RD-A-30 FF, ENG-MS-RD-A-20 FF, ENG-MS-RD-A-10 FF, ENG-MS-RD-A-40 FF, CO-SW-ML-160 FF, CO-EW-210_R FF, PRO-SD-1DL-140 FF, PRO-R25-SD-DL-140 FF |  |
| MS-CF-MV |  | Completion of Construction Works for Medium Voltage Network | 0d | 2027-04-24 | 2027-04-24 | CO-MV-TF-230 SS, CO-MV-TF-230 FF, CO-MV-TF-240 FF, CO-MV-TF-250 FF, CO-MV-TF-260 FF |  |
| MS-MO-20 |  | Completion of Storm Drainage Ponds | 0d | 2027-05-12 | 2027-05-12 | CO-SD-PO-110-P2 SS, CO-SD-PO-110-P2 FF, CO-SD-PO-110-P1 FF |  |
| MS-CF-SD |  | Completion of Construction Works for Storm Drainage Network | 0d | 2027-05-24 | 2027-05-24 | CO-SD-ML-TF-130 FF, CO-SD-MH-220 FF, PRO-SD-1DL-100 FF, CO-SD-MH-200 FF, PRO-R25-SD-DL-100 FF, CO-SD-MH-190 FF, ENG-MT-SD-ML-A-100 FF, CO-EW-230 FF, ENG-MS-SD-ML-A-110 FF, ENG-MT-SD-ML-A-110 FF, ENG-SH-SD-ML-A-110 FF, MS-MM-130 FF, MS-MM-140 FF, CO-SD-MH-180 FF, PRO-SD-1DL-140 FF, PRO-R25-SD-DL-140 FF, CO-SD-MH-260 FF, PRO-R25-RD-DL-170 FF, PRO-RD-1DL-130 FF, PRO-R25-RD-DL-100 FF, PRO-RD-1DL-100 FF, ENG-SH-RD-A-100 FF, ENG-SH-RD-A-110 FF, ENG-MS-RD-A-30 FF, ENG-MS-RD-A-20 FF, ENG-MS-RD-A-10 FF, ENG-MS-RD-A-40 FF, CO-TE-MH-190 FF, CO-TE-DW-160 FF, CO-SL-CL-300 FF, CO-SL-LP-380 FF, CON-LV-HC-150 FF, CON-LV-ML-150 FF, CO-MV-ML-300 FF, CO-IR-ML-180 FF, CO-PW-FH-190 FF, CO-PW-VC-250 FF, CO-PW-ML-160 FF, CO-TSE-ML-230 FF, CO-SW-ML-160 FF, CO-SW-MH-250 FF, CO-SD-CB-200 FF, CO-SD-ML-160 FF, CO-EW-210_R FF, CO-SL-LP-520 FF, PRO-R25-RD-DL-110 FF, PRO-RD-1DL-110 FF, CO-IR-TF-210 FF, CO-TE-CTV-210 FF, CO-SD-ML-220 FF, CO-PW-ML-220 FF, CO-PW-VC-310 FF, CO-TSE-ML-330 FF, CO-MV-ML-360 FF, CO-SL-LP-480 FF, CO-SL-CL-360 FF, CON-LV-HC-210 FF, CON-LV-ML-210 FF, CO-TE-DW-240 FF, CO-PW-FH-250 FF, CO-TE-MH-250 FF, CO-RD-PB-140 FF, CO-IR-ML-380 FF, CO-SD-ML-130 FF, PRO-R25-SD-DL-110 FF, PRO-R25-SD-DL-130 FF, PRO-SD-1DL-130 FF, PRO-SD-1DL-120 FF, ENG-MT-SD-CB-A-110 FF, ENG-SH-SD-CB-A-110 FF, ENG-MS-SD-CB-A-110 FF, ENG-MT-SW-ML-A-100 FF, ENG-SH-SW-ML-A-110 FF, ENG-MS-SW-ML-A-110 FF, PRO-SW-1DL-100 FF, ENG-MT-SW-ML-A-110 FF, PRO-LV-DP-1DL-100 FF, PRO-LV-DP-DL-100 FF, CON-LV-DP-120 FF, CON-LV-DP-190 FF, CON-LV-DP-110 FF, ENG-SH-MSN-A-120 FF, ENG-SH-CTV-A-110 FF, ENG-MS-CTV-A-110 FF, ENG-MT-CTV-A-100 FF, PRO-CTV-1DL-100 FF, CO-TE-MH-160 FF, CO-TE-CTV-110 FF, CO-SD-MH-TF-210 SS, CO-SD-MH-TF-210 FF, CO-SD-MH-TF-230 FF |  |
| MS-CF-SL |  | Completion of Construction Works for Street Lighting Network | 0d | 2027-05-24 | 2027-05-24 | CO-SL-DB-340 FF, CO-SL-LP-420 FF, CO-SL-LP-580 FF, CO-SL-ES-330 FF, PRO-R25-SL-DL-160 FF, CO-SL-LP-570 FF, CO-SL-CL-420 FF, CO-EW-200 FF, CO-SL-LP-530 FF, CO-SL-ES-310, CO-SL-LP-520 FF, CO-SL-CL-390 FF, CO-EW-240 FF, CO-SL-LP-470 FF, CO-SL-ES-290 FF, CO-SL-LP-480 FF, CO-SL-CL-360 FF, CO-EW-230 FF, CO-SL-LP-370 FF, CO-SL-ES-250 FF, CO-SL-LP-380 FF, CO-SL-CL-300 FF, ENG-MT-SL-DB-A-100 FF, CO-EW-210_R FF, MS-MM-130 FF, MS-MM-140 FF, PRO-R25-SL-DL-170 FF |  |
| MS-CF-IR |  | Completion of Construction Works for Irrigation Network | 0d | 2027-05-25 | 2027-05-25 | CO-PW-TF-110 FF, CO-PW-TF-130 FF, ENG-MT-IR-ML-A-110 FF, PRO-IR-1DL-110 FF, PRO-R25-IR-DL-110 FF, PRO-IR-1DL-100 FF, CO-PW-ML-110 FF, PRO-R25-IR-DL-100 FF, ENG-SH-IR-ML-A-110 FF, ENG-MS-IR-ML-A-110 FF, ENG-MT-IR-ML-A-100 FF, CO-PW-ML-100 FF, CO-EW-200 FF, MS-MM-130 FF, MS-MM-140 FF, CO-IR-ML-190 FF, CO-IR-ML-170 FF, CO-IR-ML-160 FF, CO-EW-240 FF, CO-IR-ML-150 FF, CO-SW-MH-250 FF, CO-SW-MH-240 FF, CO-SW-MH-230 FF, PRO-SW-1DL-110 FF, PRO-R25-SW-DL-110 FF, CO-SW-MH-220 FF, ENG-MT-SW-ML-A-100 FF, ENG-SH-SW-ML-A-110 FF, ENG-MS-SW-ML-A-110 FF, CO-SD-MH-380 FF, CO-SD-ML-250 FF, CO-SW-MH-210 FF, CO-SD-CB-200 FF, PRO-R25-SD-DL-110 FF, PRO-R25-SD-DL-130 FF, PRO-SD-1DL-130 FF, PRO-SD-1DL-120 FF, CO-SD-CB-190 FF, ENG-MT-SD-CB-A-110 FF, ENG-SH-SD-CB-A-110 FF, ENG-MS-SD-CB-A-110 FF, CO-SD-CB-180 FF, CO-SW-ML-160 FF, PRO-SW-1DL-100 FF, PRO-R25-SW-DL-100 FF, CO-SW-ML-150 FF, ENG-MT-SW-ML-A-110 FF, CO-SW-ML-140 FF, CO-IR-TF-170 FF, CO-IR-TF-180, CO-IR-TF-210 FF |  |
| MS-CF-LO |  | Completion of Construction Works for Low Voltage Network | 0d | 2027-05-25 | 2027-05-25 | CON-LV-DP-190 FF, CON-LV-DP-110 FF, CO-MV-TF-250 FF, CON-LV-ML-120 SS, CON-LV-ML-120 FF, CON-LV-HC-120 FF, CON-LV-DP-120 FF, CON-LV-TT-110 FF, CON-LV-TT-100 FF, CON-LV-ES-100 FF, CON-LV-ML-150 FF, CON-LV-HC-150 FF, CON-LV-TT-120 FF, CON-LV-ML-180 FF, CON-LV-HC-180 FF, CON-LV-DP-180 FF, CON-LV-TT-150 FF, CON-LV-TT-140 FF, CON-LV-ES-120 FF, CON-LV-ML-210 FF, CON-LV-HC-210 FF, CON-LV-TT-160 FF, CON-LV-ML-240 FF, CON-LV-HC-240 FF, CON-LV-DP-240 FF, CON-LV-TT-190 FF, CON-LV-TT-180 FF, CON-LV-ES-140 FF, PRO-LV-DP-1DL-100 FF, PRO-LV-DP-DL-100 FF, CON-LV-DP-130 FF, PRO-LV-TT-1DL-100 FF, PRO-LV-TT-DL-100 FF, CO-MV-TF-230 FF, PRO-LV-DP-1DL-110 FF, PRO-LV-DP-DL-120 FF |  |
| MS-CF-PW |  | Completion of Construction Works for Potable Water Network | 0d | 2027-05-25 | 2027-05-25 | CO-PW-TF-120 SS, CO-PW-TF-120 FF, CO-PW-TF-140 FF, CO-PW-TF-170 FF, CO-PW-TF-200 FF |  |
| MS-CF-RD |  | Completion of Construction Works for Road Works | 0d | 2027-05-25 | 2027-05-25 | CO-RD-F-TS-120 FF, CO-RD-F-TS-130 FF, CO-RD-F-TS-150 FF, CO-RD-F-TS-170 FF, CO-RD-F-TS-180 FF, CO-RD-F-TS-190, CO-RD-F-TS-200 FF |  |
| MS-CF-TE |  | Completion of Construction Works for Telecom and Light Current Networks | 0d | 2027-05-25 | 2027-05-25 | CO-TE-CTV-240 FF, CO-TE-CTV-TF-140 SS, CO-TE-CTV-TF-140 FF, CO-TE-CTV-TF-180 FF, CO-TE-CTV-TF-220 FF, CO-TE-CTV-TF-260 FF, CO-TE-CTV-TF-310 FF, CO-TE-CTV-TF-320 FF, CO-TE-CTV-TF-330 FF, CO-TE-CTV-TF-340 FF, CO-TE-CTV-TF-350 FF, CO-TE-CTV-TF-360 FF |  |
| MS-CF-TSE |  | Completion of Construction Works for Treated Sewage Effluent Network | 0d | 2027-06-12 | 2027-06-12 | CO-TSE-TF-170 SS, CO-TSE-TF-170 FF, CO-TSE-TF-180 FF, CO-TSE-TF-190 FF, CO-TSE-TF-200 FF, CO-TSE-TF-210 FF |  |
| MS-MO-60 |  | Completion of Irrigation and Potable Tank | 0d | 2027-06-27 | 2027-06-27 | CO-UB-PWT-170 FF, CO-UB-PS-320 FF, CO-UB-IRT-210 FF, PRO-TSE-LL-MSI-30 FF, CO-UB-PWT-110 SS, CO-UB-PWT-110 FF, CO-UB-PWT-150 FF, CO-UB-IRT-150 FF, CO-UB-IRT-190 FF |  |
| MS-MO-10 |  | Completion of Sewage Pump Station | 0d | 2027-06-30 | 2027-06-30 | PRO-SPS-LL-MSI-10 FF, MS-CF-PW FF, CO-UB-PS-390 FF, CO-UB-LS-280 SS, CO-UB-LS-280 FF, CO-UB-LS-370 FF, CO-UB-LS-390 FF |  |
| MS-MO-50 |  | Completion of Water Pump Station | 0d | 2027-06-30 | 2027-06-30 | PRO-LS-LL-MSI-20 FF, CO-UB-PS-280 FF, CO-UB-PS-390 SS, CO-UB-PS-390 FF, CO-UB-PS-320 FF, CO-UB-PS-250 FF, CO-UB-PS-160 FF |  |
| MS-MO-40 |  | Completion of Control Room | 0d | 2027-07-19 | 2027-07-19 | T/C-CTV10 SS, T/C-CTV10 FF |  |
| MS-CF-PF |  | Project Completion Date | 0d | 2027-07-22 | 2027-07-22 | CO-SD-PO-110-P2 SS, CO-SD-PO-110-P2 FF, MS-CF-PW FF, MS-CF-IR FF, MS-CF-SW FF, MS-CF-SD FF, MS-CF-TSE FF, MS-CF-MV FF, MS-CF-SL FF, MS-CF-TE FF, MS-CF-RD FF, MS-MO-20 FF, MS-MO-60 FF, MS-MO-40 FF, MS-MO-50 FF, MS-MO-10 FF, MS-CF-EBL FF, MS-CF-ENG FF, CO-LS-SF-170 FF, T/C-CTV FF, HO-130 FF, HO-200 FF, HO-100 FF, HO-180 FF, HO-190 FF, HO-150 FF, HO-160 FF, HO-170 FF, HO-210 FF, HO-140 FF, HO-120 FF, HO-220 FF, HO-230 FF, HO-110 FF, HO-250 FF, HO-260 FF, HO-270 FF, HO-240 FF, HO-280 FF, MS-CF-LO FF, T/C-CTV10 FF, T/C-CTV20 FF |  |
|  | CM1 | **Control Milestones** |  | 2026-01-06 | 2026-11-02 |  |  |
|  | 2 | **The Employer** |  | 2026-02-03 | 2026-11-02 |  |  |
| MS-MM-100 |  | Right of Access and Possession of the Site | 0d | 2026-02-03 A | 2026-02-03 A | MS-CS-PS FF, MS-CS-PS SS | 100% |
| MS-MM-130 |  | Receipt the Site Benchmark Coordinates (Original Point) From The Employer | 0d | 2026-02-03 A | 2026-02-03 A | MS-MM-100 SS, MS-MM-100 FF | 100% |
| MS-MM-140 |  | Receipt the Site Levels Details From The Employer | 0d | 2026-02-03 A | 2026-02-03 A | MS-MM-130 SS, MS-MM-130 FF | 100% |
| MS-MM-150 |  | Receipt of Approved Concept Master Plan for the Project From the Employer | 0d | 2026-02-03 A | 2026-02-03 A | MS-MM-100 SS, MS-MM-100 FF | 100% |
| MS-MM-160 |  | Receipt of Master Plan Approval Letter for the Project From the Employer | 0d | 2026-02-03 A | 2026-02-03 A | MS-MM-100 SS, MS-MM-100 FF | 100% |
| MS-MM-120 |  | Receipt of Advance Payment for the Project From The Employer | 0d | 2026-11-02 | 2026-11-02 | MS-MM-100 SS, MS-MM-100 FF |  |
|  | 1 | **NOC's** |  | 2026-01-06 | 2026-01-06 |  |  |
|  | INF | **Infrastructure Networks** |  | 2026-01-06 | 2026-01-06 |  |  |
| MS-CS-IR |  | Receipt of Approval NOC From Relevant Authorities For Irrigation Network | 0d | 2026-01-06 A | 2026-01-06 A | MS-CS-PS SS | 100% |
| MS-CS-LV |  | Receipt of Approval NOC From Relevant Authorities For Low Voltage Network | 0d | 2026-01-06 A | 2026-01-06 A | MS-CS-PS SS | 100% |
| MS-CS-MV |  | Receipt of Approval NOC From Relevant Authorities For Medium Voltage Network | 0d | 2026-01-06 A | 2026-01-06 A | MS-CS-PS SS | 100% |
| MS-CS-PW |  | Receipt of Approval NOC From Relevant Authorities For Potable Water Network | 0d | 2026-01-06 A | 2026-01-06 A | MS-CS-PS SS | 100% |
| MS-CS-RD |  | Receipt of Approval NOC From Relevant Authorities For Roads Network | 0d | 2026-01-06 A | 2026-01-06 A | MS-CS-PS SS | 100% |
| MS-CS-SD |  | Receipt of Approval NOC From Relevant Authorities For Storm Network | 0d | 2026-01-06 A | 2026-01-06 A | MS-CS-PS SS | 100% |
| MS-CS-SL |  | Receipt of Approval NOC From Relevant Authorities For Street Lighting Network | 0d | 2026-01-06 A | 2026-01-06 A | MS-CS-PS SS | 100% |
| MS-CS-SW |  | Receipt of Approval NOC From Relevant Authorities For Sewage Network | 0d | 2026-01-06 A | 2026-01-06 A | MS-CS-PS SS | 100% |
| MS-CS-TE |  | Receipt of Approval NOC From Relevant Authorities For Telecom and Light Current Network | 0d | 2026-01-06 A | 2026-01-06 A | MS-CS-PS SS | 100% |
| MS-CS-TSE |  | Receipt of Approval NOC From Relevant Authorities For Treated Sewage Effluent Network | 0d | 2026-01-06 A | 2026-01-06 A | MS-CS-PS SS | 100% |
|  | SU | **Superstructure Works** |  | 2026-01-06 | 2026-01-06 |  |  |
| MS-CS-IR10 |  | Receipt of Approval NOC From Relevant Authorities For Sewage Pump Station | 0d | 2026-01-06 A | 2026-01-06 A | MS-CS-PS SS | 100% |
| MS-CS-LV10 |  | Receipt of Approval NOC From Relevant Authorities For Boundary Fence | 0d | 2026-01-06 A | 2026-01-06 A | MS-CS-PS SS | 100% |
| MS-CS-MV10 |  | Receipt of Approval NOC From Relevant Authorities For Water Pump Station | 0d | 2026-01-06 A | 2026-01-06 A | MS-CS-PS SS | 100% |
| MS-CS-SL10 |  | Receipt of Approval NOC From Relevant Authorities For Storm Drainage Ponds | 0d | 2026-01-06 A | 2026-01-06 A | MS-CS-PS SS | 100% |
| MS-CS-TE10 |  | Receipt of Approval NOC From Relevant Authorities For Storage Tank (TSE) | 0d | 2026-01-06 A | 2026-01-06 A | MS-CS-PS SS | 100% |
| MS-CS-TE20 |  | Receipt of Approval NOC From Relevant Authorities For Control Room | 0d | 2026-01-06 A | 2026-01-06 A | MS-CS-PS SS | 100% |
| MS-CS-TSE10 |  | Receipt of Approval NOC From Relevant Authorities For Gaurd Room | 0d | 2026-01-06 A | 2026-01-06 A | MS-CS-PS SS | 100% |
|  | MM | **Intermediate Milestones** |  |  |  |  |  |
|  | MOB | **Preliminaries and Mobilization Works** |  | 2026-01-06 | 2026-04-11 |  |  |
|  | MOB | **Mobilization Works** |  | 2026-01-06 | 2026-04-11 |  |  |
| MOB-10 |  | Clear and Grub for Offices and Access Roads | 14d | 2026-01-06 A | 2026-01-20 A | MS-CS-PS FF, MS-CS-PS SS | 100% |
| MOB-20 |  | Project Site Layout Plan Approval | 7d | 2026-01-21 A | 2026-01-27 A | MS-CS-PS SS, MOB-10 | 100% |
| MOB-80 |  | Construction Site Access Roads | 17d | 2026-01-28 A | 2026-02-15 A | MOB-20, MS-CS-PS SS | 100% |
| MOB-50 |  | Mobilization of Major Manpower | 6d | 2026-02-12 A | 2026-02-26 A | MOB-40 SS, MS-CS-PS SS, MOB-30 | 100% |
| MOB-60 |  | Mobilization of Major Equipments | 6d | 2026-02-12 A | 2026-03-07 A | MS-CS-PS SS, MOB-30 | 100% |
| MOB-30 |  | Supply & Install of Temporary Offices for the Project | 9d | 2026-04-01 A | 2026-04-09 A | MS-CS-PS SS, MOB-20 | 100% |
| MOB-40 |  | Construction Project Store | 10d | 2026-04-01 A | 2026-04-11 A | MS-CS-PS SS, MOB-20 | 100% |
| MOB-70 |  | Installation Project Sign Board | 10d | 2026-04-01 A | 2026-04-11 A | MOB-10 SS, MS-CS-PS SS, MOB-20 | 100% |
|  | 1 | **Project Main Documents From The Contractor** |  | 2026-01-06 | 2026-02-05 |  |  |
| PRE-CON-MDC-10 |  | Submission Project Execution Plan | 28d | 2026-01-06 A | 2026-02-05 A | MS-CS-PS SS | 100% |
| PRE-CON-MDC-20 |  | Submission Project Baseline Schedule | 28d | 2026-01-06 A | 2026-02-05 A | MS-CS-PS SS | 100% |
| PRE-CON-MDC-30 |  | Submission Project Health & Safety Plan | 28d | 2026-01-06 A | 2026-02-05 A | MS-CS-PS SS | 100% |
| PRE-CON-MDC-40 |  | Submission Project Quality Control Plan | 28d | 2026-01-06 A | 2026-02-05 A | MS-CS-PS SS | 100% |
| PRE-CON-MDC-50 |  | Submission Project Surveying Report | 28d | 2026-01-06 A | 2026-02-05 A | MS-CS-PS SS | 100% |
| PRE-CON-MDC-60 |  | Submission Project Geotechnical Soil Report | 28d | 2026-01-06 A | 2026-02-05 A | MS-CS-PS SS | 100% |
| PRE-CON-MDC-70 |  | Submission Project Environmental Plan | 28d | 2026-01-06 A | 2026-02-05 A | MS-CS-PS SS | 100% |
| PRE-CON-MDC-80 |  | Submission Project Organization Chart and Communications Plan | 28d | 2026-01-06 A | 2026-02-05 A | MS-CS-PS SS | 100% |

| ID | WBS | Task | Duration | Start | Finish | Predecessors | Complete |
| --- | --- | --- | --- | --- | --- | --- | --- |
|  | ENG | **Engineering Works** |  | 2026-01-06 | 2026-11-29 |  |  |
|  | SD | **Shop Drawings** |  | 2026-01-06 | 2026-02-04 |  |  |
|  | INF | **Infrastructure Networks** |  | 2026-01-06 | 2026-02-04 |  |  |
|  | RD | **Road Works** |  | 2026-01-06 | 2026-02-04 |  |  |
|  | 1 | **General Road Works** |  | 2026-01-06 | 2026-01-28 |  |  |
| ENG-SH-RD-S-100 |  | Submission Shop Drawings for Plan and Profile of Road Works | 5d | 2026-01-06 A | 2026-01-10 A | MS-CS-RD FF, MS-CS-PS SS, MS-MM-100, MS-MM-130, MS-MM-140, MS-MM-150, MS-MM-160, MS-CS-RD SS | 100% |
| ENG-SH-RD-A-100 |  | Approval Shop Drawings for Plan and Profile of Road Works | 7d | 2026-01-11 A | 2026-01-17 A | ENG-SH-RD-S-100 | 100% |
| ENG-SH-RD-S-110 |  | Submission Shop Drawings for Roads Typical Sections and Pavement Details | 5d | 2026-01-18 A | 2026-01-21 A | MS-CS-PS SS, MS-MM-100, MS-MM-130, MS-MM-140, MS-MM-150, MS-MM-160, ENG-SH-RD-A-100, MS-CS-RD SS, MS-CS-IR SS, MS-CS-MV SS, MS-CS-SL SS, MS-CS-TE SS, MS-CS-LV SS, MS-CS-IR10 SS, MS-CS-SL10 SS, MS-CS-TSE10 SS, MS-CS-LV10 SS, MS-CS-TE20 SS | 100% |
| ENG-SH-RD-A-110 |  | Approval Shop Drawings for Roads Typical Sections and Pavement Details | 7d | 2026-01-22 A | 2026-01-28 A | ENG-SH-RD-S-110 | 100% |
|  | 10 | **Landscape Works** |  | 2026-01-22 | 2026-02-04 |  |  |
| ENG-SH-HS-S-100 |  | Submission Shop Drawings for Landscape Works | 7d | 2026-01-22 A | 2026-01-28 A | MS-CS-PS SS, MS-MM-100, MS-MM-130, MS-MM-140, MS-MM-150, MS-MM-160, MS-CS-RD SS, ENG-SH-RD-S-100, ENG-SH-RD-S-110 | 100% |
| ENG-SH-HS-A-110 |  | Approval Shop Drawings for Landscape Works | 7d | 2026-01-29 A | 2026-02-04 A | ENG-SH-HS-S-100 | 100% |
|  | 11 | **Traffic Sign Boards and Road Marking** |  | 2026-01-22 | 2026-02-04 |  |  |
| ENG-SH-MRK-S-110 |  | Submission Shop Drawings for Road Markings | 7d | 2026-01-22 A | 2026-01-28 A | MS-CS-PS SS, MS-MM-100, MS-MM-130, MS-MM-140, MS-MM-150, MS-MM-160, MS-CS-RD SS, ENG-SH-RD-S-100, ENG-SH-RD-S-110 | 100% |
| ENG-SH-TSB-S-100 |  | Submission Shop Drawings for Traffic Signs Boards | 7d | 2026-01-22 A | 2026-01-28 A | MS-CS-PS SS, MS-MM-100, MS-MM-130, MS-MM-140, MS-MM-150, MS-MM-160, MS-CS-RD SS, ENG-SH-RD-S-100, ENG-SH-RD-S-110 | 100% |
| ENG-SH-MRK-A-110 |  | Approval Shop Drawings for Road Markings | 7d | 2026-01-29 A | 2026-02-04 A | ENG-SH-MRK-S-110 | 100% |
| ENG-SH-TSB-A-100 |  | Approval Shop Drawings for Traffic Signs Boards | 7d | 2026-01-29 A | 2026-02-04 A | ENG-SH-TSB-S-100 | 100% |
|  | ST | **Storm Drainage Network** |  | 2026-01-22 | 2026-02-04 |  |  |
|  | 1 | **Main Line Sections** |  | 2026-01-22 | 2026-02-04 |  |  |
| ENG-SH-SD-ML-S-100 |  | Submission Shop Drawings for Main Line and Manholes of Storm Drainage Network | 7d | 2026-01-22 A | 2026-01-28 A | MS-CS-PS SS, MS-MM-100, MS-MM-130, MS-MM-140, MS-MM-150, MS-MM-160, MS-CS-SD SS, ENG-SH-RD-S-100, ENG-SH-RD-S-110 | 100% |
| ENG-SH-SD-ML-A-110 |  | Approval Shop Drawings for Main Line and Manholes of Storm Drainage Network | 7d | 2026-01-29 A | 2026-02-04 A | ENG-SH-SD-ML-S-100 | 100% |
|  | 2 | **Catch Basin Sections** |  | 2026-01-22 | 2026-02-04 |  |  |
| ENG-SH-SD-CB-S-100 |  | Submission Shop Drawings for Secondary Line and Catch Basin of Storm Drainage Network | 7d | 2026-01-22 A | 2026-01-28 A | MS-CS-PS SS, MS-MM-100, MS-MM-130, MS-MM-140, MS-MM-150, MS-MM-160, ENG-SH-RD-S-100, ENG-SH-RD-S-110 | 100% |
| ENG-SH-SD-CB-A-110 |  | Approval Shop Drawings for Secondary Line and Catch Basin of Storm Drainage Network | 7d | 2026-01-29 A | 2026-02-04 A | ENG-SH-SD-CB-S-100 | 100% |
|  | PO | **Storm Drainage Ponds** |  | 2026-01-22 | 2026-01-28 |  |  |
| ENG-SH-DPO-S-110 |  | Submission Shop Drawings Package for Storm Drainage Ponds | 4d | 2026-01-22 A | 2026-01-25 A | MS-CS-PS SS, MS-MM-100, MS-MM-130, MS-MM-140, MS-MM-150, MS-MM-160, MS-CS-SL10 SS, ENG-SH-RD-S-100, ENG-SH-RD-S-110 | 100% |
| ENG-SH-DPO-A-120 |  | Approval Shop Drawings Package for Storm Drainage Ponds | 4d | 2026-01-26 A | 2026-01-28 A | ENG-SH-DPO-S-110 | 100% |
|  | SW | **Sewage Network** |  | 2026-01-22 | 2026-02-04 |  |  |
|  | 1 | **Main Line Sections** |  | 2026-01-22 | 2026-02-04 |  |  |
| ENG-SH-SW-ML-S-100 |  | Submission Shop Drawings for Main Line and Manholes of Sewage Network | 7d | 2026-01-22 A | 2026-01-28 A | MS-CS-SW FF, MS-CS-PS SS, MS-MM-100, MS-MM-130, MS-MM-140, MS-MM-150, MS-MM-160, MS-CS-SW SS, ENG-SH-RD-S-100, ENG-SH-RD-S-110 | 100% |
| ENG-SH-SW-ML-A-110 |  | Approval Shop Drawings for Main Line and Manholes of Sewage Network | 7d | 2026-01-29 A | 2026-02-04 A | ENG-SH-SW-ML-S-100 | 100% |
|  | TSE | **Treated Sewage Effluent Network** |  | 2026-01-22 | 2026-02-04 |  |  |
| ENG-SH-TSE-ML-S-110 |  | Submission Shop Drawings for Main Line Treated Sewage Effluent Network | 7d | 2026-01-22 A | 2026-01-28 A | MS-CS-PS SS, MS-MM-100, MS-MM-130, MS-MM-140, MS-MM-150, MS-MM-160, MS-CS-TSE SS, ENG-SH-RD-S-100, ENG-SH-RD-S-110 | 100% |
| ENG-SH-TSE-ML-A-120 |  | Approval Shop Drawings for Main Line Treated Sewage Effluent Network | 7d | 2026-01-29 A | 2026-02-04 A | ENG-SH-TSE-ML-S-110 | 100% |
|  | PW | **Potable Water Network** |  | 2026-01-22 | 2026-02-04 |  |  |
|  | 1 | **Main Line Sections** |  | 2026-01-22 | 2026-02-04 |  |  |
| ENG-SH-PW-ML-S-100 |  | Submission Shop Drawings for Main Line and Valve Chambers of Potable Water Network | 7d | 2026-01-22 A | 2026-01-28 A | MS-CS-PS SS, MS-MM-100, MS-MM-130, MS-MM-140, MS-MM-150, MS-MM-160, MS-CS-PW SS, ENG-SH-RD-S-100, ENG-SH-RD-S-110 | 100% |
| ENG-SH-PW-ML-A-110 |  | Approval Shop Drawings for Main Line and Valve Chambers of Potable Water Network | 7d | 2026-01-29 A | 2026-02-04 A | ENG-SH-PW-ML-S-100 | 100% |
|  | 2 | **Fire Hydrant** |  | 2026-01-22 | 2026-02-04 |  |  |
| ENG-SH-PW-FH-S-100 |  | Submission Shop Drawings for Fire Hydrant Network | 7d | 2026-01-22 A | 2026-01-28 A | MS-CS-PS SS, MS-MM-100, MS-MM-130, MS-MM-140, MS-MM-150, MS-MM-160, MS-CS-PW SS, ENG-SH-RD-S-100, ENG-SH-RD-S-110 | 100% |
| ENG-SH-PW-FH-A-110 |  | Approval Shop Drawings for Fire Hydrant Network | 7d | 2026-01-29 A | 2026-02-04 A | ENG-SH-PW-FH-S-100 | 100% |
|  | IR | **Irrigation Network** |  | 2026-01-22 | 2026-02-04 |  |  |
|  | 1 | **Main Line Sections** |  | 2026-01-22 | 2026-02-04 |  |  |
| ENG-SH-IR-ML-S-100 |  | Submission Shop Drawings for Main Line and Valves & Bulbblers and Sprinklers of Irrigation Network | 7d | 2026-01-22 A | 2026-01-28 A | MS-CS-IR FF, MS-CS-PS SS, MS-MM-100, MS-MM-130, MS-MM-140, MS-MM-150, MS-MM-160, MS-CS-IR SS, ENG-SH-RD-S-100, ENG-SH-RD-S-110 | 100% |
| ENG-SH-IR-ML-A-110 |  | Approval Shop Drawings for Main Line and Valves & Bulbblers and Sprinklers of Irrigation Network | 7d | 2026-01-29 A | 2026-02-04 A | ENG-SH-IR-ML-S-100 | 100% |
|  | MV | **Medium Voltage Network** |  | 2026-01-22 | 2026-02-04 |  |  |
| ENG-SH-MV-S-100 |  | Submission Shop Drawings for Medium Voltage Network | 7d | 2026-01-22 A | 2026-01-28 A | MS-CS-PS SS, MS-MM-100, MS-MM-130, MS-MM-140, MS-MM-150, MS-MM-160, MS-CS-MV SS, ENG-SH-RD-S-100, ENG-SH-RD-S-110 | 100% |
| ENG-SH-MV-A-110 |  | Approval Shop Drawings for Medium Voltage Network | 7d | 2026-01-29 A | 2026-02-04 A | ENG-SH-MV-S-100 | 100% |
|  | LV | **Low Voltage Network** |  | 2026-01-22 | 2026-02-04 |  |  |
| ENG-SH-LV-S-110 |  | Submission Shop Drawings for Low Voltage Network | 7d | 2026-01-22 A | 2026-01-28 A | MS-CS-PS SS, MS-MM-100, MS-MM-130, MS-MM-140, MS-MM-150, MS-MM-160, MS-CS-LV SS, ENG-SH-RD-S-100, ENG-SH-RD-S-110 | 100% |
| ENG-SH-LV-A-120 |  | Approval Shop Drawings for Low Voltage Network | 7d | 2026-01-29 A | 2026-02-04 A | ENG-SH-LV-S-110 | 100% |
|  | SL | **Street Lighting Network** |  | 2026-01-22 | 2026-02-04 |  |  |
| ENG-SH-SL-S-100 |  | Submission Shop Drawings for Street Lighting Network | 7d | 2026-01-22 A | 2026-01-28 A | MS-CS-PS SS, MS-MM-100, MS-MM-130, MS-MM-140, MS-MM-150, MS-MM-160, MS-CS-SL SS, ENG-SH-RD-S-100, ENG-SH-RD-S-110 | 100% |
| ENG-SH-SL-A-110 |  | Approval Shop Drawings for Street Lighting Network | 7d | 2026-01-29 A | 2026-02-04 A | ENG-SH-SL-S-100 | 100% |
|  | TL | **Telecom Network** |  | 2026-01-22 | 2026-02-04 |  |  |
| ENG-SH-CTV-S-100 |  | Submission Shop Drawings for CCTV and Telephone Complete Systems | 7d | 2026-01-22 A | 2026-01-28 A | MS-CS-PS SS, MS-MM-100, MS-MM-130, MS-MM-140, MS-MM-150, MS-MM-160, MS-CS-TE SS, ENG-SH-RD-S-100, ENG-SH-RD-S-110 | 100% |
| ENG-SH-MSN-A-120 |  | Approval Shop Drawings for MSN and Access Control Systems | 7d | 2026-01-22 A | 2026-01-28 A | ENG-SH-MSN-S-110 SS, ENG-SH-MSN-S-110 FF | 100% |
| ENG-SH-MSN-S-110 |  | Submission Shop Drawings for MSN and Access Control Systems | 7d | 2026-01-22 A | 2026-01-28 A | MS-CS-PS SS, MS-MM-100, MS-MM-130, MS-MM-140, MS-MM-150, MS-MM-160, MS-CS-TE SS, ENG-SH-RD-S-100, ENG-SH-RD-S-110 | 100% |
| ENG-SH-TE-S-100 |  | Submission Shop Drawings for Telecom Network | 7d | 2026-01-22 A | 2026-01-28 A | MS-CS-PS SS, MS-MM-100, MS-MM-130, MS-MM-140, MS-MM-150, MS-MM-160, MS-CS-TE SS, ENG-SH-RD-S-100, ENG-SH-RD-S-110 | 100% |
| ENG-SH-CTV-A-110 |  | Approval Shop Drawings for CCTV and Telephone Complete Systems | 7d | 2026-01-29 A | 2026-02-04 A | ENG-SH-CTV-S-100 | 100% |
| ENG-SH-TE-A-110 |  | Approval Shop Drawings for Telecom Network | 7d | 2026-01-29 A | 2026-02-04 A | ENG-SH-TE-S-100 | 100% |
|  | 1 | **Superstructure Works** |  | 2026-01-22 | 2026-02-04 |  |  |
|  | LS | **Water Pump Station** |  | 2026-01-22 | 2026-02-04 |  |  |
| ENG-SH-LS-S-160 |  | Submission Shop Drawings Package for Water Pump Station | 7d | 2026-01-22 A | 2026-01-28 A | MS-CS-PS SS, MS-MM-100, MS-MM-130, MS-MM-140, MS-MM-150, MS-MM-160, MS-CS-MV10 SS, ENG-SH-RD-S-100, ENG-SH-RD-S-110 | 100% |
| ENG-SH-LS-A-170 |  | Approval Shop Drawings Package for Water Pump Station | 7d | 2026-01-29 A | 2026-02-04 A | ENG-SH-LS-S-160 | 100% |
|  | ST | **Storage Tank (TSE)** |  | 2026-01-22 | 2026-02-04 |  |  |
| ENG-SH-ST-S-170 |  | Submission Shop Drawings Package for Storage Tank TSE | 7d | 2026-01-22 A | 2026-01-28 A | MS-CS-PS SS, MS-MM-100, MS-MM-130, MS-MM-140, MS-MM-150, MS-MM-160, MS-CS-TE10 SS, ENG-SH-RD-S-100, ENG-SH-RD-S-110 | 100% |
| ENG-SH-ST-A-180 |  | Approval Shop Drawings Package for Storage Tank TSE | 7d | 2026-01-29 A | 2026-02-04 A | ENG-SH-ST-S-170 | 100% |
|  | CR | **Control Room** |  | 2026-01-22 | 2026-02-04 |  |  |
| ENG-SH-ST-S-180 |  | Submission Shop Drawings Package for Control Room | 7d | 2026-01-22 A | 2026-01-28 A | MS-CS-TE20 FF, MS-CS-PS SS, MS-MM-100, MS-MM-130, MS-MM-140, MS-MM-150, MS-MM-160, MS-CS-TE10 SS, MS-CS-TE20 SS, ENG-SH-RD-S-100, ENG-SH-RD-S-110 | 100% |

| ID | WBS | Task | Duration | Start | Finish | Predecessors | Complete |
| --- | --- | --- | --- | --- | --- | --- | --- |
| ENG-SH-ST-A-190 |  | Approval Shop Drawings Package for Control Room | 7d | 2026-01-29 A | 2026-02-04 A | ENG-SH-ST-S-180 | 100% |
|  | PS | **Sewage Pump Stations** |  | 2026-01-22 | 2026-02-04 |  |  |
| ENG-SH-SPS-S-150 |  | Submission Shop Drawings Package for Sewage Pump Station | 7d | 2026-01-22 A | 2026-01-28 A | MS-CS-IR10 FF, MS-CS-PS SS, MS-MM-100, MS-MM-130, MS-MM-140, MS-MM-150, MS-MM-160, MS-CS-IR10 SS, ENG-SH-RD-S-100, ENG-SH-RD-S-110 | 100% |
| ENG-SH-SPS-A-160 |  | Approval Shop Drawings Package for Sewage Pump Station | 7d | 2026-01-29 A | 2026-02-04 A | ENG-SH-SPS-S-150 | 100% |
|  | GR | **Gaurd Room** |  | 2026-01-22 | 2026-02-04 |  |  |
| ENG-SH-GR-S-180 |  | Submission Shop Drawings Package for Gaurd Room | 7d | 2026-01-22 A | 2026-01-28 A | MS-CS-PS SS, MS-MM-100, MS-MM-130, MS-MM-140, MS-MM-150, MS-MM-160, MS-CS-TSE10 SS, ENG-SH-RD-S-100, ENG-SH-RD-S-110 | 100% |
| ENG-SH-GR-A-190 |  | Approval Shop Drawings Package for Gaurd Room | 7d | 2026-01-29 A | 2026-02-04 A | ENG-SH-GR-S-180 | 100% |
|  | FE | **Boundary Fence** |  | 2026-01-22 | 2026-02-04 |  |  |
| ENG-SH-GR-S-190 |  | Submission Shop Drawings Package for Boundary Fence | 7d | 2026-01-22 A | 2026-01-28 A | MS-CS-PS SS, MS-MM-100, MS-MM-130, MS-MM-140, MS-MM-150, MS-MM-160, MS-CS-LV10 SS, ENG-SH-RD-S-100, ENG-SH-RD-S-110 | 100% |
| ENG-SH-GR-A-200 |  | Approval Shop Drawings Package for Boundary Fence | 7d | 2026-01-29 A | 2026-02-04 A | ENG-SH-GR-S-190 | 100% |
|  | SD1 | **Method Statements** |  | 2026-01-18 | 2026-01-31 |  |  |
|  | INF | **Infrastructure Networks** |  | 2026-01-18 | 2026-01-31 |  |  |
|  | 9 | **Storm Drainage Network** |  | 2026-01-25 | 2026-01-31 |  |  |
|  | 1 | **Main Line Sections** |  | 2026-01-25 | 2026-01-28 |  |  |
| ENG-MS-SD-ML-S-100 |  | Submission Method Statement for Main Line of Storm Drainage Network | 2d | 2026-01-25 A | 2026-01-25 A | ENG-MS-RD-A-10 | 100% |
| ENG-MS-SD-ML-A-110 |  | Approval Method Statement for Main Line of Storm Drainage Network | 4d | 2026-01-26 A | 2026-01-28 A | ENG-MS-SD-ML-S-100 | 100% |
|  | 2 | **Catch Basin Sections** |  | 2026-01-25 | 2026-01-31 |  |  |
| ENG-MS-SD-CB-S-100 |  | Submission Method Statement for Catch Basin of Storm Drainage Network | 4d | 2026-01-25 A | 2026-01-27 A | ENG-MS-RD-A-10 | 100% |
| ENG-MS-SD-CB-A-110 |  | Approval Method Statement for Catch Basin of Storm Drainage Network | 4d | 2026-01-28 A | 2026-01-31 A | ENG-MS-SD-CB-S-100 | 100% |
|  | PO | **Storm Drainage Ponds** |  | 2026-01-25 | 2026-01-31 |  |  |
| ENG-MS-DPO-S-120 |  | Submission Method Statement Package for Storm Drainage Ponds | 4d | 2026-01-25 A | 2026-01-27 A | ENG-MS-RD-A-10 | 100% |
| ENG-MS-DPO-A-130 |  | Approval Method Statement Package for Storm Drainage Ponds | 4d | 2026-01-28 A | 2026-01-31 A | ENG-MS-DPO-S-120 | 100% |
|  | 2 | **Sewage Network** |  | 2026-01-25 | 2026-01-31 |  |  |
|  | 1 | **Main Line Sections** |  | 2026-01-25 | 2026-01-31 |  |  |
| ENG-MS-SW-ML-S-100 |  | Submission Method Statement for Main Line of Sewage Network | 4d | 2026-01-25 A | 2026-01-27 A | ENG-MS-RD-A-10 | 100% |
| ENG-MS-SW-ML-A-110 |  | Approval Method Statement for Main Line of Sewage Network | 4d | 2026-01-28 A | 2026-01-31 A | ENG-MS-SW-ML-S-100 | 100% |
|  | TSE | **Treated Sewage Effluent Network** |  | 2026-01-25 | 2026-01-31 |  |  |
| ENG-MS-TSE-ML-S-110 |  | Submission Method Statement for Main Line of Treated Sewage Effluent Network | 4d | 2026-01-25 A | 2026-01-27 A | ENG-MS-RD-A-10 | 100% |
| ENG-MS-TSE-ML-A-120 |  | Approval Method Statement for Main Line of Treated Sewage Effluent Network | 4d | 2026-01-28 A | 2026-01-31 A | ENG-MS-TSE-ML-S-110 | 100% |
|  | 3 | **Potable Water Network** |  | 2026-01-25 | 2026-01-31 |  |  |
|  | 1 | **Main Line Sections** |  | 2026-01-25 | 2026-01-31 |  |  |
| ENG-MS-PW-ML-S-100 |  | Submission Method Statement for Main Line of Potable Water Network | 4d | 2026-01-25 A | 2026-01-27 A | ENG-MS-RD-A-10 | 100% |
| ENG-MS-PW-ML-A-110 |  | Approval Method Statement for Main Line of Potable Water Network | 4d | 2026-01-28 A | 2026-01-31 A | ENG-MS-PW-ML-S-100 | 100% |
|  | 4 | **Irrigation Network** |  | 2026-01-25 | 2026-01-31 |  |  |
|  | 1 | **Main Line Sections** |  | 2026-01-25 | 2026-01-31 |  |  |
| ENG-MS-IR-ML-S-100 |  | Submission Method Statement for Main Line of Irrigation Network | 4d | 2026-01-25 A | 2026-01-27 A | ENG-MS-RD-A-10 | 100% |
| ENG-MS-IR-ML-A-110 |  | Approval Method Statement for Main Line of Irrigation Network | 4d | 2026-01-28 A | 2026-01-31 A | ENG-MS-IR-ML-S-100 | 100% |
|  | 5 | **Medium Voltage Network** |  | 2026-01-25 | 2026-01-31 |  |  |
| ENG-MS-MV-S-100 |  | Submission Method Statement for Medium Voltage Network | 4d | 2026-01-25 A | 2026-01-27 A | ENG-MS-RD-A-10 | 100% |
| ENG-MS-MV-A-110 |  | Approval Method Statement for Medium Voltage Network | 4d | 2026-01-28 A | 2026-01-31 A | ENG-MS-MV-S-100 | 100% |
|  | 1 | **Low Voltage Network** |  | 2026-01-25 | 2026-01-31 |  |  |
| ENG-MS-MV-S-110 |  | Submission Method Statement for Low Voltage Network | 4d | 2026-01-25 A | 2026-01-27 A | ENG-MS-RD-A-10 | 100% |
| ENG-MS-MV-A-120 |  | Approval Method Statement for Low Voltage Network | 4d | 2026-01-28 A | 2026-01-31 A | ENG-MS-MV-S-110 | 100% |
|  | 7 | **Street Lighting Network** |  | 2026-01-25 | 2026-01-31 |  |  |
| ENG-MS-SL-S-100 |  | Submission Method Statement for Street Lighting Network | 4d | 2026-01-25 A | 2026-01-27 A | ENG-MS-RD-A-10 | 100% |
| ENG-MS-SL-A-110 |  | Approval Method Statement for Street Lighting Network | 4d | 2026-01-28 A | 2026-01-31 A | ENG-MS-SL-S-100 | 100% |
|  | 8 | **Telecom Network** |  | 2026-01-25 | 2026-01-31 |  |  |
| ENG-MS-CTV-S-100 |  | Submission Method Statement for CCTV, Telephone, MSN, and Access Control Systems | 4d | 2026-01-25 A | 2026-01-27 A | ENG-MS-RD-A-10 | 100% |
| ENG-MS-TE-S-100 |  | Submission Method Statement for Telecom Network | 4d | 2026-01-25 A | 2026-01-27 A | ENG-MS-RD-A-10 | 100% |
| ENG-MS-CTV-A-110 |  | Approval Method Statement for CCTV, Telephone, MSN, and Access Control Systems | 4d | 2026-01-28 A | 2026-01-31 A | ENG-MS-CTV-S-100 | 100% |
| ENG-MS-TE-A-110 |  | Approval Method Statement for Telecom Network | 4d | 2026-01-28 A | 2026-01-31 A | ENG-MS-TE-S-100 | 100% |
|  | 10 | **Road Works** |  | 2026-01-18 | 2026-01-28 |  |  |
|  | 1 | **General Road Works** |  | 2026-01-18 | 2026-01-28 |  |  |
| ENG-MS-RD-S-10 |  | Submission Method Statement for Plan and Profile of Road Works | 4d | 2026-01-18 A | 2026-01-20 A | ENG-SH-RD-A-100 | 100% |
| ENG-MS-RD-S-30 |  | Submission Method Statement of Extraover for Pedestrian ramps | 4d | 2026-01-18 A | 2026-01-20 A | ENG-SH-RD-A-100 | 100% |
| ENG-MS-RD-S-40 |  | Submission Method Statement for Intersections of Road Works | 4d | 2026-01-18 A | 2026-01-20 A | ENG-SH-RD-A-100 | 100% |
| ENG-MS-RD-A-10 |  | Approval Method Statement for Plan and Profile of Road Works | 4d | 2026-01-21 A | 2026-01-24 A | ENG-MS-RD-S-10 | 100% |
| ENG-MS-RD-A-30 |  | Approval Method Statement of Extraover for Pedestrian ramps | 4d | 2026-01-21 A | 2026-01-24 A | ENG-MS-RD-S-30 | 100% |
| ENG-MS-RD-A-40 |  | Approval Method Statement for Intersections of Road Works | 4d | 2026-01-21 A | 2026-01-24 A | ENG-MS-RD-S-40 | 100% |
| ENG-MS-RD-S-20 |  | Submission Method Statement for Roads Typical Sections and Pavement Details | 4d | 2026-01-22 A | 2026-01-25 A | ENG-SH-RD-A-110 SS | 100% |
| ENG-MS-RD-A-20 |  | Approval Method Statement for Roads Typical Sections and Pavement Details | 4d | 2026-01-26 A | 2026-01-28 A | ENG-MS-RD-S-20 | 100% |
|  | 10 | **Landscape Works** |  | 2026-01-22 | 2026-01-28 |  |  |
| ENG-MS-HS-S-10 |  | Submission Method Statement for Landscaping Works | 4d | 2026-01-22 A | 2026-01-25 A | ENG-SH-RD-A-110 SS | 100% |
| ENG-MS-HS-A-10 |  | Approval Method Statement for Landscaping Works | 4d | 2026-01-26 A | 2026-01-28 A | ENG-MS-HS-S-10 | 100% |
|  | 11 | **Traffic Sign Boards and Road Marking** |  | 2026-01-22 | 2026-01-28 |  |  |
| ENG-MS-MRK-S-10 |  | Submission Method Statement for Roads Markings | 4d | 2026-01-22 A | 2026-01-25 A | ENG-SH-RD-A-110 SS | 100% |
| ENG-MS-TSB-S-10 |  | Submission Method Statement for Traffic Signs Boards | 4d | 2026-01-22 A | 2026-01-25 A | ENG-SH-RD-A-110 SS | 100% |
| ENG-MS-MRK-A-10 |  | Approval Method Statement for Roads Markings | 4d | 2026-01-26 A | 2026-01-28 A | ENG-MS-MRK-S-10 | 100% |
| ENG-MS-TSB-A-10 |  | Approval Method Statement for Traffic Signs Boards | 4d | 2026-01-26 A | 2026-01-28 A | ENG-MS-TSB-S-10 | 100% |
|  | 1 | **Superstructure Works** |  | 2026-01-25 | 2026-01-31 |  |  |

| ID | WBS | Task | Duration | Start | Finish | Predecessors | Complete |
| --- | --- | --- | --- | --- | --- | --- | --- |
|  | LS | **Water Pump Station** |  | 2026-01-25 | 2026-01-31 |  |  |
| ENG-MS-LS-S-170 |  | Submission Method Statement Package for Water Pump Station | 4d | 2026-01-25 A | 2026-01-27 A | ENG-MS-RD-A-10 | 100% |
| ENG-MS-LS-A-180 |  | Approval Method Statement Package for Water Pump Station | 4d | 2026-01-28 A | 2026-01-31 A | ENG-MS-LS-S-170 | 100% |
|  | ST | **Storage Tank (TSE)** |  | 2026-01-25 | 2026-01-31 |  |  |
| ENG-MS-ST-S-180 |  | Submission Method Statement Package for Storage Tank TSE | 4d | 2026-01-25 A | 2026-01-27 A | ENG-MS-RD-A-10 | 100% |
| ENG-MS-ST-A-190 |  | Approval Method Statement Package for Storage Tank TSE | 4d | 2026-01-28 A | 2026-01-31 A | ENG-MS-ST-S-180 | 100% |
|  | ST1 | **Control Room** |  | 2026-01-25 | 2026-01-31 |  |  |
| ENG-MS-ST-S-190 |  | Submission Method Statement Package for Control Room | 4d | 2026-01-25 A | 2026-01-27 A | ENG-MS-RD-A-10 | 100% |
| ENG-MS-ST-A-200 |  | Approval Method Statement Package for Control Room | 4d | 2026-01-28 A | 2026-01-31 A | ENG-MS-ST-S-190 | 100% |
|  | PS | **Sewage Pump Stations** |  | 2026-01-25 | 2026-01-31 |  |  |
| ENG-MS-SPS-S-160 |  | Submission Method Statement Package for Sewage Pump Station | 4d | 2026-01-25 A | 2026-01-27 A | ENG-MS-RD-A-10 | 100% |
| ENG-MS-SPS-A-170 |  | Approval Method Statement Package for Sewage Pump Station | 4d | 2026-01-28 A | 2026-01-31 A | ENG-MS-SPS-S-160 | 100% |
|  | GR | **Gaurd Room** |  | 2026-01-25 | 2026-01-31 |  |  |
| ENG-MS-GR-S-200 |  | Submission Method Statement Package for Gaurd Room | 4d | 2026-01-25 A | 2026-01-27 A | ENG-MS-RD-A-10 | 100% |
| ENG-MS-GR-A-210 |  | Approval Method Statement Package for Gaurd Room | 4d | 2026-01-28 A | 2026-01-31 A | ENG-MS-GR-S-200 | 100% |
|  | FE | **Boundary Fence** |  | 2026-01-25 | 2026-01-31 |  |  |
| ENG-MS-GR-S-210 |  | Submission Method Statement Package for Boundary Fence | 4d | 2026-01-25 A | 2026-01-27 A | ENG-MS-RD-A-10 | 100% |
| ENG-MS-GR-A-220 |  | Approval Method Statement Package for Boundary Fence | 4d | 2026-01-28 A | 2026-01-31 A | ENG-MS-GR-S-210 | 100% |
|  | SD11 | **Material Submittals and Approvals** |  | 2026-01-06 | 2026-11-29 |  |  |
|  | 2 | **Short Lead Time Items** |  | 2026-01-06 | 2026-06-13 |  |  |
|  | INF | **Infrastructure Networks** |  | 2026-01-06 | 2026-01-31 |  |  |
|  | 9 | **Storm Drainage Network** |  | 2026-01-06 | 2026-01-19 |  |  |
|  | MS | **Submission of Material** |  | 2026-01-06 | 2026-01-12 |  |  |
|  | 1 | **Main Line Sections** |  | 2026-01-06 | 2026-01-12 |  |  |
| ENG-MT-SD-ML-S-100 |  | Material Submittal for Manholes of Storm Drainage Network | 7d | 2026-01-06 A | 2026-01-12 A | MS-CS-SD SS | 100% |
| ENG-MT-SD-ML-S-110 |  | Material Submittal for Main Line Pipes of Storm Drainage Network | 7d | 2026-01-06 A | 2026-01-12 A | MS-CS-SD SS | 100% |
|  | 2 | **Catch Basin Sections** |  | 2026-01-06 | 2026-01-12 |  |  |
| ENG-MT-SD-CB-S-100 |  | Material Submittal for Catch Basins of Storm Drainage Network | 7d | 2026-01-06 A | 2026-01-12 A | MS-CS-SD SS | 100% |
| ENG-MT-SD-CB-S-110 |  | Material Submittal for Catch Basin Pipes of Storm Drainage Network | 7d | 2026-01-06 A | 2026-01-12 A | MS-CS-SD SS | 100% |
|  | 4 | **Storm Drainage Pond** |  | 2026-01-06 | 2026-01-12 |  |  |
| ENG-MT-DPO-CV-S-100 |  | Material Submittal for Materials of Storm Drainage Ponds | 7d | 2026-01-06 A | 2026-01-12 A | MS-CS-SL10 SS | 100% |
|  | 3 | **Testing and Finishes** |  | 2026-01-06 | 2026-01-12 |  |  |
| ENG-MT-SD-TF-S-100 |  | Material Submittal for Manhole Covers of Storm Drainage Network | 7d | 2026-01-06 A | 2026-01-12 A | MS-CS-SD SS | 100% |
| ENG-MT-SD-TF-S-110 |  | Material Submittal for Catch Basin Covers of Storm Drainage Network | 7d | 2026-01-06 A | 2026-01-12 A | MS-CS-SD SS | 100% |
|  | MA | **Approval of Material** |  | 2026-01-13 | 2026-01-19 |  |  |
|  | 1 | **Main Line Sections** |  | 2026-01-13 | 2026-01-19 |  |  |
| ENG-MT-SD-ML-A-100 |  | Material Approval for Manholes of Storm Drainage Network | 6d | 2026-01-13 A | 2026-01-19 A | ENG-MT-SD-ML-S-100 | 100% |
| ENG-MT-SD-ML-A-110 |  | Material Approval for Main Line Pipes of Storm Drainage Network | 6d | 2026-01-13 A | 2026-01-19 A | ENG-MT-SD-ML-S-110 | 100% |
|  | 2 | **Catch Basin Sections** |  | 2026-01-13 | 2026-01-19 |  |  |
| ENG-MT-SD-CB-A-100 |  | Material Approval for Catch Basins of Storm Drainage Network | 6d | 2026-01-13 A | 2026-01-19 A | ENG-MT-SD-CB-S-100 | 100% |
| ENG-MT-SD-CB-A-110 |  | Material Approval for Catch Basin Pipes of Storm Drainage Network | 6d | 2026-01-13 A | 2026-01-19 A | ENG-MT-SD-CB-S-110 | 100% |
|  | 4 | **Storm Drainage Pond** |  | 2026-01-13 | 2026-01-19 |  |  |
| ENG-MT-DPO-CV-A-110 |  | Material Approval for Materials of Storm Drainage Ponds | 6d | 2026-01-13 A | 2026-01-19 A | ENG-MT-DPO-CV-S-100 | 100% |
|  | 3 | **Testing and Finishes** |  | 2026-01-13 | 2026-01-19 |  |  |
| ENG-MT-SD-TF-A-100 |  | Material Approval for Manhole Covers of Storm Drainage Network | 6d | 2026-01-13 A | 2026-01-19 A | ENG-MT-SD-TF-S-100 | 100% |
| ENG-MT-SD-TF-A-110 |  | Material Approval for Catch Basin Covers of Storm Drainage Network | 6d | 2026-01-13 A | 2026-01-19 A | ENG-MT-SD-TF-S-110 | 100% |
|  | 2 | **Sewage Network** |  | 2026-01-06 | 2026-01-19 |  |  |
|  | MS | **Submission of Material** |  | 2026-01-06 | 2026-01-12 |  |  |
|  | 1 | **Main Line Sections** |  | 2026-01-06 | 2026-01-12 |  |  |
| ENG-MT-SW-ML-S-100 |  | Material Submittal for Manholes of Sewage Network | 7d | 2026-01-06 A | 2026-01-12 A | MS-CS-SW SS | 100% |
| ENG-MT-SW-ML-S-110 |  | Material Submittal for Main Line Pipes of Sewage Network | 7d | 2026-01-06 A | 2026-01-12 A | MS-CS-SW SS | 100% |
|  | 3 | **Testing and Finishes** |  | 2026-01-06 | 2026-01-12 |  |  |
| ENG-MT-SW-TF-S-100 |  | Material Submittal for Manhole Covers of Sewage Network | 7d | 2026-01-06 A | 2026-01-12 A | MS-CS-SW SS | 100% |
|  | MA | **Approval of Material** |  | 2026-01-13 | 2026-01-19 |  |  |
|  | 1 | **Main Line Sections** |  | 2026-01-13 | 2026-01-19 |  |  |
| ENG-MT-SW-ML-A-100 |  | Material Approval for Manholes of Sewage Network | 6d | 2026-01-13 A | 2026-01-19 A | ENG-MT-SW-ML-S-100 | 100% |
| ENG-MT-SW-ML-A-110 |  | Material Approval for Main Line Pipes of Sewage Network | 7d | 2026-01-13 A | 2026-01-19 A | ENG-MT-SW-ML-S-110 | 100% |
|  | 3 | **Testing and Finishes** |  | 2026-01-13 | 2026-01-19 |  |  |
| ENG-MT-SW-TF-A-100 |  | Material Approval for Manhole Covers of Sewage Network | 6d | 2026-01-13 A | 2026-01-19 A | ENG-MT-SW-TF-S-100 | 100% |
|  | 1 | **Treated Sewage Effluent (Tse)** |  | 2026-01-06 | 2026-01-19 |  |  |
|  | MS | **Submission of Material** |  | 2026-01-06 | 2026-01-12 |  |  |
| ENG-MT-IR-ML-S-120 |  | Material Submittal for Materials of Treated Sewage Effluent (TSE) | 7d | 2026-01-06 A | 2026-01-12 A | MS-CS-TSE SS | 100% |
|  | MA | **Approval of Material** |  | 2026-01-13 | 2026-01-19 |  |  |
| ENG-MT-IR-ML-A-120 |  | Material Approval for Materials of Treated Sewage Effluent (TSE) | 6d | 2026-01-13 A | 2026-01-19 A | ENG-MT-IR-ML-S-120 | 100% |
|  | 3 | **Potable Water Network** |  | 2026-01-06 | 2026-01-19 |  |  |
|  | MS | **Submission of Material** |  | 2026-01-06 | 2026-01-12 |  |  |
|  | 1 | **Main Line Sections** |  | 2026-01-06 | 2026-01-12 |  |  |
| ENG-MT-PW-ML-S-100 |  | Material Submittal for Main Line Pipes and Materials of Potable Water Network | 7d | 2026-01-06 A | 2026-01-12 A | MS-CS-PW SS | 100% |
| ENG-MT-PW-ML-S-110 |  | Material Submittal for Main Line Valves of Potable Water Network | 7d | 2026-01-06 A | 2026-01-12 A | MS-CS-PW SS | 100% |
|  | 3 | **Fire Hydrant** |  | 2026-01-06 | 2026-01-12 |  |  |

| ID | WBS | Task | Duration | Start | Finish | Predecessors | Complete |
| --- | --- | --- | --- | --- | --- | --- | --- |
| ENG-MT-PW-FH-S-100 |  | Material Submittal for Fire Hydrant of Potable Water Network | 7d | 2026-01-06 A | 2026-01-12 A | MS-CS-PW SS | 100% |
|  | 4 | **Testing and Finishes** |  | 2026-01-06 | 2026-01-12 |  |  |
| ENG-MT-PW-TF-S-100 |  | Material Submittal for Surface Box of Potable Water Network | 7d | 2026-01-06 A | 2026-01-12 A | MS-CS-PW SS | 100% |
|  | MA | **Approval of Material** |  | 2026-01-13 | 2026-01-19 |  |  |
|  | 1 | **Main Line Sections** |  | 2026-01-13 | 2026-01-19 |  |  |
| ENG-MT-PW-ML-A-100 |  | Material Approval for Main Line Pipes and Materials of Potable Water Network | 6d | 2026-01-13 A | 2026-01-19 A | ENG-MT-PW-ML-S-100 | 100% |
| ENG-MT-PW-ML-A-110 |  | Material Approval for Valves of Potable Water Network | 6d | 2026-01-13 A | 2026-01-19 A | ENG-MT-PW-ML-S-110 | 100% |
|  | 3 | **Fire Hydrant** |  | 2026-01-13 | 2026-01-19 |  |  |
| ENG-MT-PW-FH-A-100 |  | Material Approval for Fire Hydrants of Potable Water Network | 6d | 2026-01-13 A | 2026-01-19 A | ENG-MT-PW-FH-S-100 | 100% |
|  | 4 | **Testing and Finishes** |  | 2026-01-13 | 2026-01-19 |  |  |
| ENG-MT-PW-TF-A-100 |  | Material Approval for Surface Box of Potable Water Network | 6d | 2026-01-13 A | 2026-01-19 A | ENG-MT-PW-TF-S-100 | 100% |
|  | 4 | **Irrigation Network** |  | 2026-01-06 | 2026-01-19 |  |  |
|  | MS | **Submission of Material** |  | 2026-01-06 | 2026-01-12 |  |  |
|  | 1 | **Main Line Pipes** |  | 2026-01-06 | 2026-01-12 |  |  |
| ENG-MT-IR-ML-S-100 |  | Material Submittal for Main Line Pipes of Irrigation Network | 7d | 2026-01-06 A | 2026-01-12 A | MS-CS-IR SS | 100% |
| ENG-MT-IR-ML-S-110 |  | Material Submittal for Main Line Valves of Irrigation Network | 7d | 2026-01-06 A | 2026-01-12 A | MS-CS-IR SS | 100% |
|  | MA | **Approval of Material** |  | 2026-01-13 | 2026-01-19 |  |  |
|  | 1 | **Main Line Pipes** |  | 2026-01-13 | 2026-01-19 |  |  |
| ENG-MT-IR-ML-A-100 |  | Material Approval for Main Line Pipes of Irrigation Network | 6d | 2026-01-13 A | 2026-01-19 A | ENG-MT-IR-ML-S-100 | 100% |
| ENG-MT-IR-ML-A-110 |  | Material Approval for Valves of Irrigation Network | 6d | 2026-01-13 A | 2026-01-19 A | ENG-MT-IR-ML-S-110 | 100% |
|  | 5 | **Medium Voltage Network** |  | 2026-01-06 | 2026-01-19 |  |  |
|  | MS | **Submission of Material** |  | 2026-01-06 | 2026-01-12 |  |  |
| ENG-MT-MV-ML-S-100 |  | Material Submittal for Medium Voltage Materials of Medium Voltage Network | 7d | 2026-01-06 A | 2026-01-12 A | MS-CS-MV FF, MS-CS-MV SS | 100% |
|  | MA | **Approval of Material** |  | 2026-01-13 | 2026-01-19 |  |  |
| ENG-MT-MV-ML-A-100 |  | Material Approval for Medium Voltage Materials of Medium Voltage Network | 6d | 2026-01-13 A | 2026-01-19 A | ENG-MT-MV-ML-S-100 | 100% |
|  | 11 | **Low Voltage Network** |  | 2026-01-06 | 2026-01-19 |  |  |
|  | MS | **Submission of Material** |  | 2026-01-06 | 2026-01-12 |  |  |
|  | 1 | **Main Low Voltage Cables Works** |  | 2026-01-06 | 2026-01-12 |  |  |
| PRO-LV-ML-S-100 |  | Material Submittal for Main Low Voltage Cables of Low Voltage Network | 7d | 2026-01-06 A | 2026-01-12 A | MS-CS-LV SS | 100% |
|  | 2 | **Service Low Voltage Cables Works** |  | 2026-01-06 | 2026-01-12 |  |  |
| PRO-LV-HC-S-100 |  | Material Submittal for Service Low Voltage Cables of Low Voltage Network | 7d | 2026-01-06 A | 2026-01-12 A | MS-CS-LV SS | 100% |
|  | 3 | **Distribution Pillars Works** |  | 2026-01-06 | 2026-01-12 |  |  |
| PRO-LV-DP-S-100 |  | Material Submittal for Distribution Pillars of Low Voltage Network | 7d | 2026-01-06 A | 2026-01-12 A | MS-CS-LV SS | 100% |
| PRO-LV-DP-S-110 |  | Material Submittal for Low Voltage Earthing of Low Voltage Network | 7d | 2026-01-06 A | 2026-01-12 A | MS-CS-LV SS | 100% |
|  | 4 | **Termination and Testing Works** |  | 2026-01-06 | 2026-01-12 |  |  |
| PRO-LV-TT-S-100 |  | Material Submittal for Cable Lugs of Low Voltage Network | 7d | 2026-01-06 A | 2026-01-12 A | MS-CS-LV SS | 100% |
|  | MA | **Approval of Material** |  | 2026-01-13 | 2026-01-19 |  |  |
|  | 1 | **Main Low Voltage Cables Works** |  | 2026-01-13 | 2026-01-19 |  |  |
| PRO-LV-ML-A-100 |  | Material Approval for Main Low Voltage Cables of Low Voltage Network | 6d | 2026-01-13 A | 2026-01-19 A | PRO-LV-ML-S-100 | 100% |
|  | 2 | **Service Low Voltage Cables Works** |  | 2026-01-13 | 2026-01-19 |  |  |
| PRO-LV-HC-A-100 |  | Material Approval for Service Low Voltage Cables of Low Voltage Network | 6d | 2026-01-13 A | 2026-01-19 A | PRO-LV-HC-S-100 | 100% |
|  | 3 | **Distribution Pillars Works** |  | 2026-01-13 | 2026-01-19 |  |  |
| PRO-LV-DP-A-100 |  | Material Approval for Distribution Pillars of Low Voltage Network | 6d | 2026-01-13 A | 2026-01-19 A | PRO-LV-DP-S-100 | 100% |
| PRO-LV-DP-A-110 |  | Material Approval for Low Voltage Earthing of Low Voltage Network | 6d | 2026-01-13 A | 2026-01-19 A | PRO-LV-DP-S-110 | 100% |
|  | 4 | **Termination and Testing Works** |  | 2026-01-13 | 2026-01-19 |  |  |
| PRO-LV-TT-A-100 |  | Material Approval for Cable Lugs of Low Voltage Network | 7d | 2026-01-13 A | 2026-01-19 A | PRO-LV-TT-S-100 | 100% |
|  | 7 | **Street Lighting Network** |  | 2026-01-06 | 2026-01-19 |  |  |
|  | MS | **Submission of Material** |  | 2026-01-06 | 2026-01-12 |  |  |
|  | 1 | **Cabling Works** |  | 2026-01-06 | 2026-01-12 |  |  |
| ENG-MT-SL-ML-S-100 |  | Material Submittal for Lighting Cables of Street Lighting Network | 7d | 2026-01-06 A | 2026-01-12 A | MS-CS-SL FF, MS-CS-SL SS | 100% |
|  | 2 | **Lighting Poles Works** |  | 2026-01-06 | 2026-01-12 |  |  |
| ENG-MT-SL-S-100 |  | Material Submittal for Lighting Poles Concrete Foundations of Street Lighting Network | 7d | 2026-01-06 A | 2026-01-12 A | MS-CS-SL SS | 100% |
| ENG-MT-SL-S-110 |  | Material Submittal for Lighting Poles of Street Lighting Network | 7d | 2026-01-06 A | 2026-01-12 A | MS-CS-SL SS | 100% |
| ENG-MT-SL-S-120 |  | Material Submittal for Lighting Fixtures of Street Lighting Network | 7d | 2026-01-06 A | 2026-01-12 A | MS-CS-SL SS | 100% |
|  | 3 | **Distribution Panel Board** |  | 2026-01-06 | 2026-01-12 |  |  |
| ENG-MT-SL-DB-S-100 |  | Material Submittal for Lighting Distrubution Panel Boards of Street Lighting Network | 7d | 2026-01-06 A | 2026-01-12 A | MS-CS-SL SS | 100% |
|  | 5 | **Termination and Testing Works** |  | 2026-01-06 | 2026-01-12 |  |  |
| ENG-MT-SL-TF-S-100 |  | Material Submittal for Fuse Boxes of Street Lighting Network | 7d | 2026-01-06 A | 2026-01-12 A | MS-CS-SL SS | 100% |
| ENG-MT-SL-TF-S-110 |  | Material Submittal for Cable Lugs of Street Lighting Network | 7d | 2026-01-06 A | 2026-01-12 A | MS-CS-SL SS | 100% |
|  | 4 | **Earthing System Works** |  | 2026-01-06 | 2026-01-12 |  |  |
| ENG-MT-SL-ES-S-100 |  | Material Submittal for Lighting Earthing of Street Lighting Network | 7d | 2026-01-06 A | 2026-01-12 A | MS-CS-SL SS | 100% |
|  | MA | **Approval of Material** |  | 2026-01-13 | 2026-01-19 |  |  |
|  | 1 | **Cabling Works** |  | 2026-01-13 | 2026-01-19 |  |  |
| ENG-MT-SL-ML-A-100 |  | Material Approval for Lighting Cables of Street Lighting Network | 6d | 2026-01-13 A | 2026-01-19 A | ENG-MT-SL-ML-S-100 | 100% |
|  | 2 | **Lighting Poles Works** |  | 2026-01-13 | 2026-01-19 |  |  |
| ENG-MT-SL-A-100 |  | Material Approval for Lighting Poles Concrete Foundations of Street Lighting Network | 6d | 2026-01-13 A | 2026-01-19 A | ENG-MT-SL-S-100 | 100% |
| ENG-MT-SL-A-110 |  | Material Approval for Lighting Poles of Street Lighting Network | 6d | 2026-01-13 A | 2026-01-19 A | ENG-MT-SL-S-110 | 100% |
| ENG-MT-SL-A-120 |  | Material Approval for Lighting Fixtures of Street Lighting Network | 6d | 2026-01-13 A | 2026-01-19 A | ENG-MT-SL-S-120 | 100% |
|  | 3 | **Distribution Panel Board** |  | 2026-01-13 | 2026-01-19 |  |  |
| ENG-MT-SL-DB-A-100 |  | Material Approval for Distrubution Panel Boards of Street Lighting Network | 6d | 2026-01-13 A | 2026-01-19 A | ENG-MT-SL-DB-S-100 | 100% |

| ID | WBS | Task | Duration | Start | Finish | Predecessors | Complete |
| --- | --- | --- | --- | --- | --- | --- | --- |
|  | 4 | **Earthing System Works** |  | 2026-01-13 | 2026-01-19 |  |  |
| ENG-MT-SL-ES-A-100 |  | Material Approval for Lighting Earthing of Street Lighting Network | 6d | 2026-01-13 A | 2026-01-19 A | ENG-MT-SL-ES-S-100 | 100% |
|  | 5 | **Termination and Testing Works** |  | 2026-01-13 | 2026-01-19 |  |  |
| ENG-MT-SL-TF-A-100 |  | Material Approval for Fuse Boxes of Street Lighting Network | 6d | 2026-01-13 A | 2026-01-19 A | ENG-MT-SL-TF-S-100 | 100% |
| ENG-MT-SL-TF-A-110 |  | Material Approval for Cable Lugs of Street Lighting Network | 6d | 2026-01-13 A | 2026-01-19 A | ENG-MT-SL-TF-S-110 | 100% |
|  | 8 | **Telecom and Light Current Networks** |  | 2026-01-06 | 2026-01-19 |  |  |
|  | MS | **Submission of Material** |  | 2026-01-06 | 2026-01-12 |  |  |
|  | 1 | **Ducts Works** |  | 2026-01-06 | 2026-01-12 |  |  |
| ENG-MT-TE-S-100 |  | Material Submittal for Ducts of Telecom Network | 7d | 2026-01-06 A | 2026-01-12 A | MS-CS-TE SS | 100% |
|  | 3 | **Manholes Works** |  | 2026-01-06 | 2026-01-12 |  |  |
| ENG-MT-TE-S-110 |  | Material Submittal for Manholes of Telecom Network | 7d | 2026-01-06 A | 2026-01-12 A | MS-CS-TE SS | 100% |
|  | 2 | **CCTV, Telephone, MSN, ACs System Works** |  | 2026-01-06 | 2026-01-12 |  |  |
| ENG-MT-CTV-S-100 |  | Material Submittal for Materials of CCTV, Telephone, MSN, and Access Control Systems | 7d | 2026-01-06 A | 2026-01-12 A | MS-CS-TE SS | 100% |
|  | MA | **Approval of Material** |  | 2026-01-13 | 2026-01-19 |  |  |
|  | 1 | **Ducts Works** |  | 2026-01-13 | 2026-01-19 |  |  |
| ENG-MT-TE-A-100 |  | Material Approval for Ducts of Telecom Network | 6d | 2026-01-13 A | 2026-01-19 A | ENG-MT-TE-S-100 | 100% |
|  | 3 | **Manholes Works** |  | 2026-01-13 | 2026-01-19 |  |  |
| ENG-MT-TE-A-110 |  | Material Approval for Manholes of Telecom Network | 6d | 2026-01-13 A | 2026-01-19 A | ENG-MT-TE-S-110 | 100% |
|  | 2 | **CCTV, Telephone, MSN, ACs System Works** |  | 2026-01-13 | 2026-01-19 |  |  |
| ENG-MT-CTV-A-100 |  | Material Approval for for Materials of CCTV, Telephone, MSN, and Access Control Systems | 6d | 2026-01-13 A | 2026-01-19 A | ENG-MT-CTV-S-100 | 100% |
|  | 10 | **Road Works** |  | 2026-01-06 | 2026-01-31 |  |  |
|  | MS | **Submission of Material** |  | 2026-01-06 | 2026-01-24 |  |  |
|  | 1 | **General Road Works** |  | 2026-01-18 | 2026-01-24 |  |  |
| ENG-MT-RD-S-100 |  | Material Submittal for Subgrade of Road Works | 7d | 2026-01-18 A | 2026-01-24 A | ENG-SH-RD-A-100, MS-CS-RD SS | 100% |
| ENG-MT-RD-S-110 |  | Material Submittal for Aggregate Base Course of Road Works | 7d | 2026-01-18 A | 2026-01-24 A | ENG-SH-RD-A-100, MS-CS-RD SS | 100% |
| ENG-MT-RD-S-120 |  | Material Submittal for Prime Coat of Road Works | 7d | 2026-01-18 A | 2026-01-24 A | ENG-SH-RD-A-100, MS-CS-RD SS | 100% |
| ENG-MT-RD-S-130 |  | Material Submittal for Asphaltic Base Course Layer of Road Works | 7d | 2026-01-18 A | 2026-01-24 A | ENG-SH-RD-A-100, MS-CS-RD SS | 100% |
| ENG-MT-RD-S-160 |  | Material Submittal for Asphaltic Wearing Course Layer for Roads Network | 7d | 2026-01-18 A | 2026-01-24 A | ENG-SH-RD-A-100, MS-CS-RD SS | 100% |
| ENG-MT-RD-S-170 |  | Material Submittal for Tack Coat Layer for Roads Network | 7d | 2026-01-18 A | 2026-01-24 A | ENG-SH-RD-A-100, MS-CS-RD SS | 100% |
|  | 10 | **Landscape Works** |  | 2026-01-06 | 2026-01-12 |  |  |
| ENG-MT-RD-S-140 |  | Material Submittal for Interlock Tiles of Landscaping | 7d | 2026-01-06 A | 2026-01-12 A | MS-CS-RD SS | 100% |
| ENG-MT-RD-S-150 |  | Material Submittal for Curbstones of Landscaping | 7d | 2026-01-06 A | 2026-01-12 A | MS-CS-RD SS | 100% |
|  | 11 | **Traffic Signs Boards and Roads Marking** |  | 2026-01-06 | 2026-01-12 |  |  |
| ENG-MT-TS-S-100 |  | Material Submittal for Traffic Signs Boards of Road Works | 7d | 2026-01-06 A | 2026-01-12 A | MS-CS-RD SS | 100% |
| ENG-MT-TS-S-110 |  | Material Submittal for Road Markings of Road Works | 7d | 2026-01-06 A | 2026-01-12 A | MS-CS-RD SS | 100% |
|  | NA | **Approval of Material** |  | 2026-01-13 | 2026-01-31 |  |  |
|  | 1 | **General Road Works** |  | 2026-01-25 | 2026-01-31 |  |  |
| ENG-MT-RD-A-100 |  | Material Approval for Subgrade of Road Works | 6d | 2026-01-25 A | 2026-01-31 A | ENG-MT-RD-S-100 | 100% |
| ENG-MT-RD-A-110 |  | Material Approval for Aggregate Base Course of Road Works | 6d | 2026-01-25 A | 2026-01-31 A | ENG-MT-RD-S-110 | 100% |
| ENG-MT-RD-A-120 |  | Material Approval for Prime Coat of Road Works | 6d | 2026-01-25 A | 2026-01-31 A | ENG-MT-RD-S-120 | 100% |
| ENG-MT-RD-A-130 |  | Material Approval for Asphaltic Base Course Layer of Road Works | 7d | 2026-01-25 A | 2026-01-31 A | ENG-MT-RD-S-130 | 100% |
| ENG-MT-RD-A-160 |  | Material Approval for Asphaltic Wearing Course Layer for Roads Network | 7d | 2026-01-25 A | 2026-01-31 A | ENG-MT-RD-S-160 | 100% |
| ENG-MT-RD-A-170 |  | Material Approval for Tack Coat Layer for Roads Network | 6d | 2026-01-25 A | 2026-01-31 A | ENG-MT-RD-S-170 | 100% |
|  | 2 | **Landscape Works** |  | 2026-01-13 | 2026-01-19 |  |  |
| ENG-MT-RD-A-140 |  | Material Approval of Interlock Tiles for Landscaping | 6d | 2026-01-13 A | 2026-01-19 A | ENG-MT-RD-S-140 | 100% |
| ENG-MT-RD-A-150 |  | Material Approval of Curbstones for Landscaping | 6d | 2026-01-13 A | 2026-01-19 A | ENG-MT-RD-S-150 | 100% |
|  | 3 | **Traffic Signs Boards and Roads Marking** |  | 2026-01-13 | 2026-01-19 |  |  |
| ENG-MT-TS-A-100 |  | Material Approval for Traffic Signs Boards of Road Works | 6d | 2026-01-13 A | 2026-01-19 A | ENG-MT-TS-S-100 | 100% |
| ENG-MT-TS-A-110 |  | Material Approval for Road Markings of Road Works | 6d | 2026-01-13 A | 2026-01-19 A | ENG-MT-TS-S-110 | 100% |
|  | 6 | **Softscape and Planting Works** |  | 2026-01-06 | 2026-01-19 |  |  |
|  | 1 | **Submission of Material** |  | 2026-01-06 | 2026-01-12 |  |  |
| ENG-MT-IR-ML-S-140 |  | Material Submittal for Softscape and Planting Works | 7d | 2026-01-06 A | 2026-01-12 A | MS-CS-RD SS | 100% |
| ENG-MT-IR-ML-S-150 |  | Material Submittal for Site Furnishings (Seating Bench,Stone Boulders and Gravel) | 7d | 2026-01-06 A | 2026-01-12 A | MS-CS-RD SS | 100% |
|  | 2 | **Approval of Material** |  | 2026-01-13 | 2026-01-19 |  |  |
| ENG-MT-IR-ML-A-140 |  | Material Approval for Softscape and Planting Works | 6d | 2026-01-13 A | 2026-01-19 A | ENG-MT-IR-ML-S-140 | 100% |
| ENG-MT-IR-ML-A-150 |  | Material Approval for Site Furnishings (Seating Bench,Stone Boulders and Gravel) | 6d | 2026-01-13 A | 2026-01-19 A | ENG-MT-IR-ML-S-150 | 100% |
|  | 1 | **Superstructure Works** |  | 2026-01-06 | 2026-06-13 |  |  |
|  | SL | **Water Pump Station** |  | 2026-01-06 | 2026-01-19 |  |  |
|  | 1 | **Submission of Material** |  | 2026-01-06 | 2026-01-12 |  |  |
| ENG-MT-SLS-CV-S-100 |  | Material Submittal for Works for Water Pump Station | 7d | 2026-01-06 A | 2026-01-12 A | MS-CS-MV10 FF, MS-CS-MV10 SS | 100% |
|  | 2 | **Approval of Material** |  | 2026-01-13 | 2026-01-19 |  |  |
| ENG-MT-SLS-CV-A-110 |  | Material Approval for Works for Water Pump Station | 6d | 2026-01-13 A | 2026-01-19 A | ENG-MT-SLS-CV-S-100 | 100% |
|  | SL111 | **Storage Tank (TSE)** |  | 2026-01-06 | 2026-01-19 |  |  |
|  | 1 | **Submission of Material** |  | 2026-01-06 | 2026-01-12 |  |  |
| ENG-MT-TSE-CV-S-130 |  | Material Submittal for Works for Storage Tank (TSE) | 7d | 2026-01-06 A | 2026-01-12 A | MS-CS-TE10 FF, MS-CS-TE10 SS | 100% |
|  | 2 | **Approval of Material** |  | 2026-01-13 | 2026-01-19 |  |  |
| ENG-MT-TSE-CV-A-140 |  | Material Approval for Works for Storage Tank (TSE) | 6d | 2026-01-13 A | 2026-01-19 A | ENG-MT-TSE-CV-S-130 | 100% |
|  | SL1112 | **Control Room** |  | 2026-02-03 | 2026-02-10 |  |  |
|  | 1 | **Submission of Material** |  | 2026-02-03 | 2026-02-04 |  |  |
| ENG-MT-TSE-CV-S-140 |  | Material Submittal for Works for Control Room | 3d | 2026-02-03 A | 2026-02-04 A | MS-CS-TE20 SS | 100% |

| ID | WBS | Task | Duration | Start | Finish | Predecessors | Complete |
| --- | --- | --- | --- | --- | --- | --- | --- |
|  | 2 | **Approval of Material** |  | 2026-02-04 | 2026-02-10 |  |  |
| ENG-MT-TSE-CV-A-150 |  | Material Approval for Works for Control Room | 6d | 2026-02-04 A | 2026-02-10 A | ENG-MT-TSE-CV-S-140 | 100% |
|  | SL1111 | **Sewage Pump Stations** |  | 2026-01-06 | 2026-02-16 |  |  |
|  | 1 | **Submission of Material** |  | 2026-01-06 | 2026-01-12 |  |  |
| ENG-MT-PS-CV-S-140 |  | Material Submittal for Works of Sewage Pump Station | 7d | 2026-01-06 A | 2026-01-12 A | MS-CS-IR10 SS | 100% |
|  | 2 | **Approval of Material** |  | 2026-02-11 | 2026-02-16 |  |  |
| ENG-MT-PS-CV-A-150 |  | Material Approval for Works of Sewage Pump Station | 5d | 2026-02-11 A | 2026-02-16 A | ENG-MT-PS-CV-S-140 | 100% |
|  | SL11 | **Gaurd Room** |  | 2026-02-18 | 2026-03-02 |  |  |
|  | 1 | **Submission of Material** |  | 2026-02-18 | 2026-02-19 |  |  |
| ENG-MT-GR-CV-S-120 |  | Material Submittal for Materials for Gaurd Room | 0d | 2026-02-18 A | 2026-02-19 A | MS-CS-TSE10 SS | 100% |
|  | 2 | **Approval of Material** |  | 2026-02-19 | 2026-03-02 |  |  |
| ENG-MT-GR-CV-A-130 |  | Material Approval for Materials for Gaurd Room | 7d | 2026-02-19 A | 2026-03-02 A | ENG-MT-GR-CV-S-120 | 100% |
|  | SL1 | **Boundary Fence** |  | 2026-02-25 | 2026-06-13 |  |  |
|  | 1 | **Submission of Material** |  | 2026-02-25 | 2026-02-26 |  |  |
| ENG-MT-FE-CV-S-110 |  | Material Submittal for Materials for Boundary Fence | 0d | 2026-02-25 A | 2026-02-26 A | MS-CS-LV10 SS | 100% |
|  | 2 | **Approval of Material** |  | 2026-02-28 | 2026-06-13 |  |  |
| ENG-MT-FE-CV-A-120 |  | Material Approval for Materials for Boundary Fence | 80d | 2026-02-28 A | 2026-06-13 A | ENG-MT-FE-CV-S-110 | 100% |
|  | 1 | **Long Lead Time Items** |  | 2026-11-02 | 2026-11-29 |  |  |
|  | 2 | **Superstructure Works** |  | 2026-11-02 | 2026-11-29 |  |  |
|  | SL | **Sewage Pump Stations** |  | 2026-11-02 | 2026-11-15 |  |  |
|  | 1 | **Submission of Material** |  | 2026-11-02 | 2026-11-08 |  |  |
| ENG-MT-SPS-MC-S-100 |  | Material Submittal for Electromechanical Works for Pump Station | 6d | 2026-11-02 | 2026-11-08 | MS-CS-IR10 SS |  |
|  | 2 | **Approval of Material** |  | 2026-11-09 | 2026-11-15 |  |  |
| ENG-MT-SPS-MC-A-110 |  | Material Approval for Electromechanical Works for Pump Station | 6d | 2026-11-09 | 2026-11-15 | ENG-MT-SPS-MC-S-100 |  |
|  | SL1 | **Storage Tank (TSE)** |  | 2026-11-02 | 2026-11-29 |  |  |
|  | 1 | **Submission of Material** |  | 2026-11-02 | 2026-11-15 |  |  |
| ENG-MT-TSE-MC-S-110 |  | Material Submittal for Electromechanical Works for Storage Tank (TSE) | 12d | 2026-11-02 | 2026-11-15 | MS-CS-TE10 SS |  |
|  | 2 | **Approval of Material** |  | 2026-11-16 | 2026-11-29 |  |  |
| ENG-MT-TSE-MC-A-120 |  | Material Approval for Electromechanical Works for Storage Tank (TSE) | 12d | 2026-11-16 | 2026-11-29 | ENG-MT-TSE-MC-S-110 |  |
|  | PROC | **Procurement Cycle** |  | 2026-05-02 | 2027-06-27 |  |  |
|  | NLL | **Short Lead Time Items** |  | 2026-05-02 | 2027-05-09 |  |  |
|  | INF | **Infrastructure Networks** |  | 2026-05-02 | 2027-05-09 |  |  |
|  | SD | **Storm Drainage Network** |  | 2026-07-01 | 2027-03-16 |  |  |
|  | PO | **Issuance of Purchase Orders** |  | 2026-07-01 | 2026-12-07 |  |  |
|  | 1 | **Main Line Sections** |  | 2026-07-01 | 2026-11-03 |  |  |
| PRO-SD-PO-110 |  | Issuance of Purchase Order for Main Line Pipes of Storm Drainage Network | 2d | 2026-07-01 A | 2026-07-02 A | ENG-MT-SD-ML-A-110, ENG-SH-SD-ML-A-110, PRO-SD-PO-100, ENG-MS-DPO-A-130 | 100% |
| PRO-SD-PO-100 |  | Issuance of Purchase Order for Manholes of Storm Drainage Network | 2d | 2026-11-02 | 2026-11-03 | ENG-MT-SD-ML-A-100, ENG-SH-SD-ML-A-110, ENG-MS-SD-ML-A-110 |  |
|  | 2 | **Catch Basin Sections** |  | 2026-11-04 | 2026-11-16 |  |  |
| PRO-SD-PO-130 |  | Issuance of Purchase Order for Catch Basins of Storm Drainage Network | 5d | 2026-11-04 | 2026-11-09 | ENG-MT-SD-CB-A-100, ENG-SH-SD-CB-A-110, PRO-SD-PO-110, ENG-MS-SD-CB-A-110 |  |
| PRO-SD-PO-150 |  | Issuance of Purchase Order for Catch Basin Pipes of Storm Drainage Network | 6d | 2026-11-10 | 2026-11-16 | ENG-MT-SD-CB-A-110, ENG-SH-SD-CB-A-110, PRO-SD-PO-130 |  |
|  | 3 | **Testing and Finishes** |  | 2026-11-17 | 2026-11-30 |  |  |
| PRO-SD-PO-120 |  | Issuance of Purchase Order for Manhole Covers of Storm Drainage Network | 6d | 2026-11-17 | 2026-11-23 | ENG-MT-SD-TF-A-100, ENG-SH-SD-ML-A-110, PRO-SD-PO-150 |  |
| PRO-SD-PO-140 |  | Issuance of Purchase Order for Catch Basin Covers of Storm Drainage Network | 6d | 2026-11-24 | 2026-11-30 | ENG-MT-SD-TF-A-110, ENG-SH-SD-CB-A-110, PRO-SD-PO-120 |  |
|  | TE1 | **Storm Drainage Ponds** |  | 2026-12-01 | 2026-12-07 |  |  |
| PRO-DPO-CV-PO-10 |  | Issuance of Purchase Order for Materials of Storm Drainage Ponds | 6d | 2026-12-01 | 2026-12-07 | MS-CF-ENG, ENG-MT-DPO-CV-A-110, ENG-SH-DPO-A-120, PRO-SD-PO-140, ENG-MS-DPO-A-130 |  |
|  | MF | **Manufacturing of Material** |  | 2026-07-05 | 2027-02-20 |  |  |
|  | 1 | **Main Line Sections** |  | 2026-07-05 | 2026-11-12 |  |  |
| PRO-SD-MF-110 |  | Manufacturing of Materials for Main Line Pipes of Storm Drainage Network | 24d | 2026-07-05 A | 2026-07-07 A | PRO-SD-PO-110 | 100% |
| PRO-SD-MF-100 |  | Manufacturing of Materials for Manholes of Storm Drainage Network | 8d | 2026-11-04 | 2026-11-12 | PRO-SD-PO-100 |  |
|  | 2 | **Catch Basin Sections** |  | 2026-11-10 | 2026-12-15 |  |  |
| PRO-SD-MF-130 |  | Manufacturing of Materials for Catch Basins of Storm Drainage Network | 25d | 2026-11-10 | 2026-12-08 | PRO-SD-PO-130 |  |
| PRO-SD-MF-150 |  | Manufacturing of Materials for Catch Basin Pipes of Storm Drainage Network | 25d | 2026-11-17 | 2026-12-15 | PRO-SD-PO-150 |  |
|  | 3 | **Testing and Finishes** |  | 2026-12-16 | 2027-02-11 |  |  |
| PRO-SD-MF-120 |  | Manufacturing of Materials for Manhole Covers of Storm Drainage Network | 20d | 2026-12-16 | 2027-01-07 | PRO-SD-PO-120, PRO-SD-MF-150 |  |
| PRO-SD-MF-140 |  | Manufacturing of Materials for Catch Basin Covers of Storm Drainage Network | 30d | 2027-01-09 | 2027-02-11 | PRO-SD-PO-140, PRO-SD-MF-120 |  |
|  | TE | **Storm Drainage Ponds** |  | 2026-12-08 | 2027-02-20 |  |  |
| PRO-DPO-CV-MF-10 |  | Manufacturing of Materials of Storm Drainage Ponds | 64d | 2026-12-08 | 2027-02-20 | PRO-DPO-CV-PO-10 |  |
|  | 1DL | **1st Material Delivery & Site Inspection** |  | 2026-07-08 | 2027-02-24 |  |  |
|  | 1 | **Main Line Sections** |  | 2026-07-08 | 2026-11-17 |  |  |
| PRO-SD-1DL-110 |  | 1ST Material Delivery for Main Line Pipes of Storm Drainage Network | 4d | 2026-07-08 A | 2026-07-12 A | MS-CF-ENG, PRO-SD-MF-110, PRO-SD-1DL-100 | 100% |
| PRO-SD-1DL-100 |  | 1ST Material Delivery for Manholes of Storm Drainage Network | 4d | 2026-11-14 | 2026-11-17 | PRO-SD-MF-100 |  |
|  | 2 | **Catch Basin Sections** |  | 2026-12-09 | 2026-12-20 |  |  |
| PRO-SD-1DL-130 |  | 1ST Material Delivery for Catch Basins of Storm Drainage Network | 4d | 2026-12-09 | 2026-12-13 | PRO-SD-MF-130, PRO-SD-1DL-110 |  |
| PRO-SD-1DL-120 |  | 1ST Material Delivery for Catch Basin Pipes of Storm Drainage Network | 4d | 2026-12-16 | 2026-12-20 | PRO-SD-MF-150, PRO-SD-1DL-130 |  |
|  | 3 | **Testing and Finishes** |  | 2027-01-09 | 2027-02-16 |  |  |
| PRO-SD-1DL-140 |  | 1ST Material Delivery for Manholes Covers of Storm Drainage Network | 4d | 2027-01-09 | 2027-01-12 | PRO-MV-1DL-100, PRO-SD-MF-120, PRO-SD-1DL-120 |  |
| PRO-SD-1DL-150 |  | 1ST Material Delivery for Catch Basin Covers of Storm Drainage Network | 4d | 2027-02-13 | 2027-02-16 | PRO-SD-MF-140, PRO-SD-1DL-140 |  |
|  | TE2 | **Storm Drainage Ponds** |  | 2027-02-21 | 2027-02-24 |  |  |
| PRO-DPO-CV-1DL-10 |  | 1ST Material Delivery for Materials of Drainage Ponds | 4d | 2027-02-21 | 2027-02-24 | PRO-DPO-CV-MF-10, PRO-SD-1DL-150 |  |
|  | DL | **Material Delivery & Site Inspection** |  | 2026-07-20 | 2027-03-16 |  |  |

| ID | WBS | Task | Duration | Start | Finish | Predecessors | Complete |
| --- | --- | --- | --- | --- | --- | --- | --- |
|  | 1 | **Main Line Sections** |  | 2026-07-20 | 2026-12-16 |  |  |
| PRO-R25-SD-DL-120 |  | Material Delivery & Site Inspection of Main Line Pipes of Storm Drainage Network | 15d | 2026-07-20 A | 2026-12-16 | PRO-SD-1DL-110 | 95% |
| PRO-R25-SD-DL-100 |  | Material Delivery & Site Inspection of Manholes of Storm Drainage Network | 10d | 2026-11-18 | 2026-11-29 | PRO-SD-1DL-100 |  |
|  | 2 | **Catch Basin Sections** |  | 2026-12-14 | 2026-12-30 |  |  |
| PRO-R25-SD-DL-130 |  | Material Delivery & Site Inspection of Catch Basins for Storm Drainage Network | 8d | 2026-12-14 | 2026-12-22 | PRO-SD-1DL-130 |  |
| PRO-R25-SD-DL-110 |  | Material Delivery & Site Inspection of Catch Basin Pipes for Storm Drainage Network | 7d | 2026-12-23 | 2026-12-30 | PRO-SD-1DL-120, PRO-R25-SD-DL-130 |  |
|  | 3 | **Testing and Finishes** |  | 2027-01-13 | 2027-03-04 |  |  |
| PRO-R25-SD-DL-140 |  | Material Delivery & Site Inspection of Manholes Covers for Storm Drainage Network | 20d | 2027-01-13 | 2027-02-04 | PRO-SD-1DL-140, PRO-R25-SD-DL-110 |  |
| PRO-R25-SD-DL-150 |  | Material Delivery & Site Inspection of Catch Basin Covers for Storm Drainage Network | 14d | 2027-02-17 | 2027-03-04 | PRO-SD-1DL-150, PRO-R25-SD-DL-140 SS |  |
|  | TE3 | **Storm Drainage Ponds** |  | 2027-02-25 | 2027-03-16 |  |  |
| PRO-DPO-CV-DL-10 |  | Material Delivery & Site Inspection for Materials of Storm Drainage Ponds | 14d | 2027-02-25 | 2027-03-16 | PRO-LV-TT-1DL-100, PRO-R25-IR-DL-140, PRO-DPO-CV-1DL-10, PRO-R25-SD-DL-150 SS, PRO-R25-TSE-DL-120 |  |
|  | SW | **Sewage Network** |  | 2026-11-02 | 2026-12-19 |  |  |
|  | PO | **Issuance of Purchase Orders** |  | 2026-11-02 | 2026-11-25 |  |  |
|  | 1 | **Main Line Sections** |  | 2026-11-02 | 2026-11-17 |  |  |
| PRO-SW-PO-100 |  | Issuance of Purchase Order for Main Line Pipes of Sewage Network | 7d | 2026-11-02 | 2026-11-09 | ENG-MT-SW-ML-A-110, ENG-SH-SW-ML-A-110, ENG-MS-SW-ML-A-110 |  |
| PRO-SW-PO-110 |  | Issuance of Purchase Order for Manhole of Sewage Network | 7d | 2026-11-10 | 2026-11-17 | ENG-MT-SW-ML-A-100, ENG-SH-SW-ML-A-110, PRO-SW-PO-100 |  |
|  | 3 | **Testing and Finishes** |  | 2026-11-18 | 2026-11-25 |  |  |
| PRO-SW-PO-120 |  | Issuance of Purchase Order for Manhole Covers of Sewage Network | 7d | 2026-11-18 | 2026-11-25 | ENG-MT-SW-TF-A-100, ENG-SH-SW-ML-A-110, PRO-SW-PO-110 |  |
|  | MF | **Manufacturing of Material** |  | 2026-11-10 | 2026-12-02 |  |  |
|  | 1 | **Main Line Sections** |  | 2026-11-10 | 2026-11-29 |  |  |
| PRO-SW-MF-100 |  | Manufacturing of Main Line Pipes for Sewage Network | 10d | 2026-11-10 | 2026-11-21 | PRO-SW-PO-100 |  |
| PRO-SW-MF-110 |  | Manufacturing of Manholes for Sewage Network | 10d | 2026-11-18 | 2026-11-29 | PRO-SW-PO-110, PRO-SW-MF-100 SS |  |
|  | 3 | **Testing and Finishes** |  | 2026-11-26 | 2026-12-02 |  |  |
| PRO-SW-MF-120 |  | Manufacturing of Manhole Covers for Sewage Network | 6d | 2026-11-26 | 2026-12-02 | PRO-SW-PO-120, PRO-SW-MF-110 SS |  |
|  | 1DL | **1st Material Delivery & Site Inspection** |  | 2026-11-22 | 2026-12-09 |  |  |
|  | 1 | **Main Line Sections** |  | 2026-11-22 | 2026-12-07 |  |  |
| PRO-SW-1DL-100 |  | 1ST Material Delivery for Main Line Pipes of Sewage Network | 4d | 2026-11-22 | 2026-11-25 | PRO-SW-MF-100 |  |
| PRO-SW-1DL-110 |  | 1ST Material Delivery for Manholes of Sewage Network | 4d | 2026-12-03 | 2026-12-07 | MS-CF-ENG, PRO-SW-MF-110, PRO-SW-1DL-100, PRO-SW-MF-120 |  |
|  | 3 | **Testing and Finishes** |  | 2026-12-08 | 2026-12-09 |  |  |
| PRO-SW-1DL-120 |  | 1ST Material Delivery for Manholes Covers of Sewage Network | 2d | 2026-12-08 | 2026-12-09 | PRO-SW-MF-120, PRO-SW-1DL-110 |  |
|  | DL | **Material Delivery & Site Inspection** |  | 2026-12-08 | 2026-12-19 |  |  |
|  | 1 | **Main Line Sections** |  | 2026-12-08 | 2026-12-19 |  |  |
| PRO-R25-SW-DL-110 |  | Material Delivery & Site Inspection of Manholes for Sewage Network | 4d | 2026-12-08 | 2026-12-12 | PRO-SW-1DL-110 |  |
| PRO-R25-SW-DL-100 |  | Material Delivery & Site Inspection of Main Line Pipes for Sewage Network | 4d | 2026-12-15 | 2026-12-19 | PRO-SW-1DL-100, PRO-R25-SW-DL-110, PRO-SW-1DL-120, PRO-R25-SW-DL-120 |  |
|  | 3 | **Testing and Finishes** |  | 2026-12-10 | 2026-12-14 |  |  |
| PRO-R25-SW-DL-120 |  | Material Delivery & Site Inspection of Manholes Covers for Sewage Network | 4d | 2026-12-10 | 2026-12-14 | PRO-SW-1DL-120 |  |
|  | TSE | **Treated Sewage Effluent (Tse)** |  | 2026-11-02 | 2026-12-31 |  |  |
|  | PO | **Issuance of Purchase Orders** |  | 2026-11-02 | 2026-11-09 |  |  |
| PRO-TSE-PO-120 |  | Issuance of Purchase Order for Materials of Treated Sewage Effluent (Tse) | 7d | 2026-11-02 | 2026-11-09 | ENG-MT-IR-ML-A-120, ENG-SH-TSE-ML-A-120, ENG-MS-TSE-ML-A-120 |  |
|  | MF | **Manufacturing of Material** |  | 2026-11-10 | 2026-12-07 |  |  |
| PRO-TSE-MF-120 |  | Manufacturing of Materials for Treated Sewage Effluent (Tse) | 24d | 2026-11-10 | 2026-12-07 | PRO-TSE-PO-120 |  |
|  | 1DL | **1st Material Delivery & Site Inspection** |  | 2026-12-08 | 2026-12-15 |  |  |
| PRO-TSE-1DL-120 |  | 1ST Material Delivery for Materials of Treated Sewage Effluent (Tse) | 7d | 2026-12-08 | 2026-12-15 | MS-CF-ENG, PRO-TSE-MF-120 |  |
|  | DL | **Material Delivery & Site Inspection** |  | 2026-12-16 | 2026-12-31 |  |  |
| PRO-R25-TSE-DL-120 |  | Material Delivery & Site Inspection of Materials for Treated Sewage Effluent (Tse) | 14d | 2026-12-16 | 2026-12-31 | PRO-TSE-1DL-120 |  |
|  | PW | **Potable Water Network** |  | 2026-05-02 | 2027-04-10 |  |  |
|  | PO | **Issuance of Purchase Orders** |  | 2026-05-02 | 2026-11-14 |  |  |
|  | 1 | **Main Line Sections** |  | 2026-05-02 | 2026-05-12 |  |  |
| PRO-PW-PO-100 |  | Issuance of Purchase Order for Main Line Pipes and Materials of Potable Water Network | 11d | 2026-05-02 A | 2026-05-12 A | ENG-MT-PW-ML-A-100, ENG-SH-PW-ML-A-110, ENG-MS-PW-ML-A-110, ENG-MS-MV-A-110 | 100% |
| PRO-PW-PO-110 |  | Issuance of Purchase Order for Valves of Potable Water Network | 11d | 2026-05-02 A | 2026-05-12 A | ENG-MT-PW-ML-A-110, ENG-SH-PW-ML-A-110, PRO-PW-PO-100, ENG-MS-HS-A-10 | 100% |
|  | 3 | **Fire Hydrant** |  | 2026-11-02 | 2026-11-07 |  |  |
| PRO-PW-PO-120 |  | Issuance of Purchase Order for Fire Hydrants of Potable Water Network | 5d | 2026-11-02 | 2026-11-07 | ENG-MT-PW-FH-A-100, ENG-SH-PW-FH-A-110, PRO-PW-PO-110 |  |
|  | 4 | **Testing and Finishes** |  | 2026-11-08 | 2026-11-14 |  |  |
| PRO-PW-PO-130 |  | Issuance of Purchase Order for Surface Box of Potable Water Network | 6d | 2026-11-08 | 2026-11-14 | ENG-MT-PW-TF-A-100, ENG-SH-PW-ML-A-110, PRO-PW-PO-120 |  |
|  | MF | **Manufacturing of Material** |  | 2026-07-05 | 2027-01-11 |  |  |
|  | 1 | **Main Line Sections** |  | 2026-07-05 | 2026-11-29 |  |  |
| PRO-PW-MF-100 |  | Manufacturing of Main Line Pipes and Materials for Potable Water Network | 34d | 2026-07-05 A | 2026-07-07 A | PRO-PW-PO-100 | 100% |
| PRO-PW-MF-110 |  | Manufacturing of Valves for Potable Water Network | 24d | 2026-11-02 | 2026-11-29 | PRO-PW-PO-110, PRO-PW-MF-100 |  |
|  | 3 | **Fire Hydrant** |  | 2026-11-30 | 2026-12-16 |  |  |
| PRO-PW-MF-120 |  | Manufacturing of Fire Hydrants for Potable Water Network | 15d | 2026-11-30 | 2026-12-16 | PRO-PW-PO-120, PRO-PW-MF-110 |  |
|  | 4 | **Testing and Finishes** |  | 2026-11-15 | 2027-01-11 |  |  |
| PRO-PW-MF-130 |  | Manufacturing for Surface Box of Potable Water Network | 50d | 2026-11-15 | 2027-01-11 | PRO-PW-PO-130 |  |
|  | 1DL | **1st Material Delivery & Site Inspection** |  | 2026-07-12 | 2027-01-19 |  |  |
|  | 1 | **Main Line Sections** |  | 2026-07-12 | 2027-01-19 |  |  |
| PRO-PW-1DL-100 |  | 1ST Material Delivery for Main Line Pipes and Materials of Potable Water Network | 7d | 2026-07-12 A | 2026-07-16 A | PRO-PW-MF-100, PRO-PW-MF-130 | 100% |
| PRO-PW-1DL-110 |  | 1ST Material Delivery for Valves of Potable Water Network | 7d | 2027-01-12 | 2027-01-19 | PRO-PW-MF-110, PRO-PW-1DL-100 |  |
|  | 3 | **Fire Hydrant** |  | 2027-01-12 | 2027-01-19 |  |  |
| PRO-PW-1DL-120 |  | 1ST Material Delivery for Fire Hydrants of Potable Water Network | 7d | 2027-01-12 | 2027-01-19 | PRO-PW-MF-120, PRO-PW-1DL-110 SS |  |
|  | 4 | **Testing and Finishes** |  | 2027-01-12 | 2027-01-19 |  |  |
| PRO-PW-1DL-130 |  | 1ST Material Delivery for Finishes of Potable Water Network | 7d | 2027-01-12 | 2027-01-19 | PRO-PW-MF-130 |  |

| ID | WBS | Task | Duration | Start | Finish | Predecessors | Complete |
| --- | --- | --- | --- | --- | --- | --- | --- |
|  | DL | **Material Delivery & Site Inspection** |  | 2026-10-10 | 2027-04-10 |  |  |
|  | 1 | **Main Line Sections** |  | 2026-10-10 | 2027-02-13 |  |  |
| PRO-R25-PW-DL-100 |  | Material Delivery & Site Inspection of Main Line Pipes and Materials for Potable Water Network | 21d | 2026-10-10 A | 2027-01-09 A | PRO-PW-1DL-100 | 100% |
| PRO-R25-PW-DL-110 |  | Material Delivery & Site Inspection of Valves for Potable Water Network | 21d | 2027-01-20 | 2027-02-13 | PRO-PW-1DL-110, PRO-R25-PW-DL-100 |  |
|  | 3 | **Fire Hydrant** |  | 2027-01-20 | 2027-01-26 |  |  |
| PRO-R25-PW-DL-120 |  | Material Delivery & Site Inspection of Fire Hydrants for Potable Water Network | 6d | 2027-01-20 | 2027-01-26 | PRO-PW-1DL-120 |  |
|  | 4 | **Testing and Finishes** |  | 2027-01-20 | 2027-04-10 |  |  |
| PRO-R25-PW-DL-130 |  | Material Delivery & Site Inspection for Finishes of Potable Water Network | 66d | 2027-01-20 | 2027-04-10 | PRO-PW-1DL-130 |  |
|  | IR | **Irrigation Network** |  | 2026-11-15 | 2027-02-09 |  |  |
|  | PO | **Issuance of Purchase Orders** |  | 2026-11-15 | 2026-11-24 |  |  |
|  | 1 | **Main Line Pipes** |  | 2026-11-15 | 2026-11-24 |  |  |
| PRO-IR-PO-100 |  | Issuance of Purchase Order for Main Line Pipes of Irrigation Network | 5d | 2026-11-15 | 2026-11-19 | ENG-MT-IR-ML-A-100, ENG-SH-IR-ML-A-110, PRO-PW-PO-130, ENG-MS-IR-ML-A-110, ENG-MS-MV-A-120, ENG-MS-SL-A-110, ENG-MS-TE-A-110, ENG-MS-CTV-A-110 |  |
| PRO-IR-PO-110 |  | Issuance of Purchase Order for Valves of Irrigation Network | 4d | 2026-11-21 | 2026-11-24 | ENG-MT-IR-ML-A-110, ENG-SH-IR-ML-A-110, PRO-IR-PO-100 |  |
|  | MF | **Manufacturing of Material** |  | 2026-11-21 | 2027-01-07 |  |  |
|  | 1 | **Main Line Pipes** |  | 2026-11-21 | 2027-01-07 |  |  |
| PRO-IR-MF-100 |  | Manufacturing of Main Line Pipes for Irrigation Network | 21d | 2026-11-21 | 2026-12-14 | PRO-IR-PO-100 |  |
| PRO-IR-MF-110 |  | Manufacturing of Valves for Irrigation Network | 21d | 2026-12-15 | 2027-01-07 | PRO-IR-PO-110, PRO-IR-MF-100 |  |
|  | 1DL | **1st Material Delivery & Site Inspection** |  | 2026-12-15 | 2027-01-16 |  |  |
|  | 1 | **Main Line Pipes** |  | 2026-12-15 | 2027-01-16 |  |  |
| PRO-IR-1DL-100 |  | 1ST Material Delivery for Main Line Pipes of Irrigation Network | 7d | 2026-12-15 | 2026-12-22 | PRO-IR-MF-100 |  |
| PRO-IR-1DL-110 |  | 1ST Material Delivery for Valves of Irrigation Network | 7d | 2027-01-09 | 2027-01-16 | PRO-IR-MF-110, PRO-IR-1DL-100 |  |
|  | DL | **Material Delivery & Site Inspection** |  | 2026-12-23 | 2027-02-09 |  |  |
|  | 1 | **Main Line Pipes** |  | 2026-12-23 | 2027-02-09 |  |  |
| PRO-R25-IR-DL-100 |  | Material Delivery & Site Inspection of Main Line Pipes for Irrigation Network | 21d | 2026-12-23 | 2027-01-16 | PRO-IR-1DL-100 |  |
| PRO-R25-IR-DL-110 |  | Material Delivery & Site Inspection of Valves for Irrigation Network | 21d | 2027-01-17 | 2027-02-09 | PRO-IR-1DL-110, PRO-R25-IR-DL-100 |  |
|  | MV | **Medium Voltage Network** |  | 2026-11-25 | 2027-02-09 |  |  |
|  | PO | **Issuance of Purchase Orders** |  | 2026-11-25 | 2026-12-01 |  |  |
| PRO-MV-PO-100 |  | Issuance of Purchase Order for Medium Voltage Materials of Medium Voltage Network | 6d | 2026-11-25 | 2026-12-01 | ENG-MT-MV-ML-A-100, ENG-SH-MV-A-110, PRO-IR-PO-110, ENG-MS-MV-A-110 |  |
|  | MF | **Manufacturing of Material** |  | 2026-12-02 | 2026-12-26 |  |  |
| PRO-MV-MF-100 |  | Manufacturing of Medium Voltage Materials for Medium Voltage Network | 21d | 2026-12-02 | 2026-12-26 | PRO-MV-PO-100 |  |
|  | 1DL | **1st Material Delivery & Site Inspection** |  | 2026-12-27 | 2027-01-03 |  |  |
| PRO-MV-1DL-100 |  | 1ST Material Delivery for Medium Voltage Materials of Medium Voltage Network | 7d | 2026-12-27 | 2027-01-03 | PRO-MV-MF-100 |  |
|  | DL | **Material Delivery & Site Inspection** |  | 2027-01-17 | 2027-02-09 |  |  |
| PRO-MV-DL-100 |  | Material Delivery & Site Inspection of Medium Voltage Materials for Medium Voltage Network | 21d | 2027-01-17 | 2027-02-09 | PRO-MV-1DL-100, PRO-R25-IR-DL-110 FF |  |
|  | LV | **Low Voltage Network** |  | 2026-11-02 | 2027-04-12 |  |  |
|  | PO | **Issuance of Purchase Orders** |  | 2026-11-02 | 2026-12-03 |  |  |
|  | 1 | **Main Low Voltage Cables Works** |  | 2026-11-02 | 2026-11-09 |  |  |
| PRO-LV-ML-PO-100 |  | Issuance of Purchase Order for Main Low Voltage Cables of Low Voltage Network | 7d | 2026-11-02 | 2026-11-09 | PRO-LV-ML-A-100, ENG-SH-LV-A-120, ENG-MS-MV-A-120 |  |
|  | 2 | **Service Low Voltage Cables Works** |  | 2026-11-02 | 2026-11-09 |  |  |
| PRO-LV-HC-PO-100 |  | Issuance of Purchase Order for Service Low Voltage Cables of Low Voltage Network | 7d | 2026-11-02 | 2026-11-09 | PRO-LV-HC-A-100, ENG-SH-LV-A-120 |  |
|  | 3 | **Distribution Pillar Works** |  | 2026-11-10 | 2026-11-25 |  |  |
| PRO-LV-DP-PO-100 |  | Issuance of Purchase Order for Distribution Pillars of Low Voltage Network | 7d | 2026-11-10 | 2026-11-17 | PRO-LV-DP-A-100, ENG-SH-LV-A-120, PRO-LV-HC-PO-100 |  |
| PRO-LV-DP-PO-110 |  | Issuance of Purchase Order for Low Voltage Earthing of Low Voltage Network | 7d | 2026-11-18 | 2026-11-25 | PRO-LV-DP-A-110, ENG-SH-LV-A-120, PRO-LV-DP-PO-100 |  |
|  | 4 | **Termination and Testing Works** |  | 2026-11-26 | 2026-12-03 |  |  |
| PRO-LV-TT-PO-100 |  | Issuance of Purchase Order for Cable Lugs of Low Voltage Network | 7d | 2026-11-26 | 2026-12-03 | PRO-LV-TT-A-100, ENG-SH-LV-A-120, PRO-LV-DP-PO-110 |  |
|  | MF | **Manufacturing of Material** |  | 2026-11-10 | 2027-02-23 |  |  |
|  | 1 | **Main Low Voltage Cables Works** |  | 2026-11-10 | 2026-12-14 |  |  |
| PRO-LV-ML-MF-100 |  | Manufacturing of Main Low Voltage Cables for Low Voltage Network | 30d | 2026-11-10 | 2026-12-14 | PRO-LV-ML-PO-100 |  |
|  | 2 | **Service Low Voltage Cables Works** |  | 2026-11-10 | 2026-12-14 |  |  |
| PRO-LV-HC-MF-100 |  | Manufacturing of Service Low Voltage Cables for Low Voltage Network | 30d | 2026-11-10 | 2026-12-14 | PRO-LV-HC-PO-100, PRO-LV-ML-MF-100 SS |  |
|  | 3 | **Distribution Pillar Works** |  | 2026-11-18 | 2027-01-11 |  |  |
| PRO-LV-DP-MF-100 |  | Manufacturing of Distribution Pillars for Low Voltage Network | 40d | 2026-11-18 | 2027-01-03 | PRO-LV-DP-PO-100, PRO-LV-HC-MF-100 SS |  |
| PRO-LV-DP-MF-110 |  | Manufacturing of Low Voltage Earthing for Low Voltage Network | 40d | 2026-11-26 | 2027-01-11 | PRO-LV-DP-PO-110, PRO-LV-DP-MF-100 SS |  |
|  | 4 | **Termination and Testing Works** |  | 2026-12-05 | 2027-02-23 |  |  |
| PRO-LV-TT-MF-100 |  | Manufacturing of Cable Lugs for Low Voltage Network | 70d | 2026-12-05 | 2027-02-23 | PRO-LV-TT-PO-100, PRO-LV-DP-MF-110 SS |  |
|  | 1DL | **1st Delivery of Material to Site** |  | 2026-12-15 | 2027-02-24 |  |  |
|  | 1 | **Main Low Voltage Cables Works** |  | 2026-12-15 | 2027-01-23 |  |  |
| PRO-LV-ML-1DL-100 |  | 1ST Material Delivery for Main Low Voltage Cables of Low Voltage Network | 34d | 2026-12-15 | 2027-01-23 | PRO-LV-ML-MF-100 |  |
|  | 2 | **Service Low Voltage Cables Works** |  | 2027-01-24 | 2027-01-31 |  |  |
| PRO-LV-HC-1DL-100 |  | 1ST Material Delivery for Service Low Voltage Cables of Low Voltage Network | 7d | 2027-01-24 | 2027-01-31 | PRO-LV-HC-MF-100, PRO-LV-ML-1DL-100 |  |
|  | 3 | **Distribution Pillar Works** |  | 2027-02-01 | 2027-02-16 |  |  |
| PRO-LV-DP-1DL-100 |  | 1ST Material Delivery for Distribution Pillars of Low Voltage Network | 7d | 2027-02-01 | 2027-02-08 | PRO-LV-DP-MF-100, PRO-LV-HC-1DL-100 |  |
| PRO-LV-DP-1DL-110 |  | 1ST Material Delivery for Low Voltage Earthing of Low Voltage Network | 7d | 2027-02-09 | 2027-02-16 | PRO-LV-DP-MF-110, PRO-LV-DP-1DL-100 |  |
|  | 4 | **Termination and Testing Works** |  | 2027-02-17 | 2027-02-24 |  |  |
| PRO-LV-TT-1DL-100 |  | 1ST Material Delivery for Cable Lugs of Low Voltage Network | 7d | 2027-02-17 | 2027-02-24 | PRO-LV-TT-MF-100 SS, PRO-LV-TT-MF-100 FF, PRO-LV-DP-1DL-110 |  |
|  | DL | **Delivery of Material to Site** |  | 2027-01-24 | 2027-04-12 |  |  |
|  | 1 | **Main Low Voltage Cables Works** |  | 2027-01-24 | 2027-01-31 |  |  |
| PRO-LV-ML-DL-100 |  | Material Delivery of Main Low Voltage Cables for Low Voltage Network | 7d | 2027-01-24 | 2027-01-31 | PRO-LV-ML-1DL-100 |  |
|  | 2 | **Service Low Voltage Cables Works** |  | 2027-02-01 | 2027-02-24 |  |  |
| PRO-LV-HC-DL-100 |  | Material Delivery of Service Low Voltage Cables for Low Voltage Network | 21d | 2027-02-01 | 2027-02-24 | PRO-LV-HC-1DL-100, PRO-LV-ML-DL-100 |  |

| ID | WBS | Task | Duration | Start | Finish | Predecessors |
| --- | --- | --- | --- | --- | --- | --- |
|  | 3 | **Distribution Pillar Works** |  | 2027-02-24 | 2027-03-22 |  |
| PRO-LV-DP-DL-120 |  | Material Delivery of Low Voltage Earthing for Low Voltage Network | 20d | 2027-02-24 | 2027-03-22 | PRO-LV-DP-1DL-110, PRO-LV-DP-DL-100 FF |
| PRO-LV-DP-DL-100 |  | Material Delivery of Distribution Pillars for Low Voltage Network | 19d | 2027-02-25 | 2027-03-22 | PRO-LV-DP-1DL-100, PRO-LV-HC-DL-100 |
|  | 4 | **Termination and Testing Works** |  | 2027-03-23 | 2027-04-12 |  |
| PRO-LV-TT-DL-100 |  | Material Delivery of Cable Lugs for Low Voltage Network | 18d | 2027-03-23 | 2027-04-12 | PRO-LV-TT-1DL-100, PRO-LV-DP-DL-120 |
|  | SL | **Street Lighting Network** |  | 2026-11-26 | 2027-04-29 |  |
|  | PO | **Issuance of Purchase Orders** |  | 2026-11-26 | 2026-12-15 |  |
|  | 1 | **Cabling Works** |  | 2026-11-26 | 2026-12-01 |  |
| PRO-SL-PO-100 |  | Issuance of Purchase Order for Lighting Cables of Street Lighting Network | 5d | 2026-11-26 | 2026-12-01 | ENG-MT-SL-ML-A-100, ENG-SH-SL-A-110, PRO-SW-PO-120, PRO-MV-PO-100 SS, ENG-MS-SL-A-110 |
|  | 2 | **Lighting Poles Works** |  | 2026-11-26 | 2026-12-01 |  |
| PRO-SL-PO-110 |  | Issuance of Purchase Order for Lighting Poles Foundations of Street Lighting Network | 5d | 2026-11-26 | 2026-12-01 | ENG-MT-SL-S-100, ENG-MT-SL-A-100, ENG-SH-SL-A-110, PRO-SL-PO-100 SS |
| PRO-SL-PO-120 |  | Issuance of Purchase Order for Lighting Poles of Street Lighting Network | 5d | 2026-11-26 | 2026-12-01 | ENG-MT-SL-S-110, ENG-MT-SL-A-110, ENG-SH-SL-A-110, PRO-SL-PO-110 SS |
| PRO-SL-PO-140 |  | Issuance of Purchase Order for Lighting Fixtures of Street Lighting Network | 5d | 2026-11-26 | 2026-12-01 | ENG-MT-SL-S-120, ENG-MT-SL-A-120, ENG-SH-SL-A-110, PRO-SL-PO-120 SS |
|  | 3 | **Distribution Panel Board** |  | 2026-11-26 | 2026-12-02 |  |
| PRO-SL-PO-160 |  | Issuance of Purchase Order for Distrubution Panel Boards of Street Lighting Network | 6d | 2026-11-26 | 2026-12-02 | ENG-MT-SL-DB-S-100, ENG-MT-SL-DB-A-100, ENG-SH-SL-A-110, PRO-SL-PO-140 SS |
|  | 4 | **Earthing System Works** |  | 2026-12-09 | 2026-12-15 |  |
| PRO-SL-PO-150 |  | Issuance of Purchase Order for Lighting Earthing of Street Lighting Network | 6d | 2026-12-09 | 2026-12-15 | ENG-MT-SL-ES-S-100, ENG-MT-SL-ES-A-100, ENG-SH-SL-A-110, PRO-SL-PO-170 |
|  | 5 | **Termination and Testing Works** |  | 2026-12-02 | 2026-12-09 |  |
| PRO-SL-PO-170 |  | Issuance of Purchase Order for Cable Lugs of Street Lighting Network | 6d | 2026-12-02 | 2026-12-08 | ENG-MT-SL-TF-S-110, ENG-MT-SL-TF-A-110, ENG-SH-SL-A-110, PRO-SL-PO-140 |
| PRO-SL-PO-130 |  | Issuance of Purchase Order for Fuse Boxes of Street Lighting Network | 6d | 2026-12-03 | 2026-12-09 | ENG-MT-SL-TF-S-100, ENG-MT-SL-TF-A-100, ENG-SH-SL-A-110, PRO-SL-PO-160 |
|  | MF | **Manufacturing of Material** |  | 2026-12-02 | 2027-03-29 |  |
|  | 1 | **Cabling Works** |  | 2026-12-02 | 2026-12-24 |  |
| PRO-SL-MF-100 |  | Manufacturing of Lighting Cables for Street Lighting Network | 20d | 2026-12-02 | 2026-12-24 | PRO-SL-PO-100 |
|  | 2 | **Lighting Poles Works** |  | 2026-12-26 | 2027-01-18 |  |
| PRO-SL-MF-110 |  | Manufacturing of Lighting Poles Foundations for Street Lighting Network | 21d | 2026-12-26 | 2027-01-18 | PRO-SL-PO-110, PRO-SL-MF-100 |
| PRO-SL-MF-120 |  | Manufacturing of Lighting Poles for Street Lighting Network | 21d | 2026-12-26 | 2027-01-18 | PRO-SL-PO-120, PRO-SL-MF-110 SS |
| PRO-SL-MF-140 |  | Manufacturing of Lighting Fixtures for Street Lighting Network | 21d | 2026-12-26 | 2027-01-18 | PRO-SL-PO-140, PRO-SL-MF-120 SS |
|  | 3 | **Distribution Panel Board** |  | 2027-01-19 | 2027-02-22 |  |
| PRO-SL-MF-160 |  | Manufacturing of Distrubution Panel Boards for Street Lighting Network | 30d | 2027-01-19 | 2027-02-22 | PRO-SL-PO-160, PRO-SL-MF-140 |
|  | 4 | **Earthing System Works** |  | 2026-12-16 | 2027-01-31 |  |
| PRO-SL-MF-150 |  | Manufacturing of Lighting Earthing for Street Lighting Network | 40d | 2026-12-16 | 2027-01-31 | PRO-SL-PO-150 |
|  | 5 | **Termination and Testing Works** |  | 2026-12-10 | 2027-03-29 |  |
| PRO-SL-MF-130 |  | Manufacturing of Fuse Boxes for Street Lighting Network | 70d | 2026-12-10 | 2027-03-01 | PRO-SL-PO-130 |
| PRO-SL-MF-170 |  | Manufacturing of Cable Lugs for Street Lighting Network | 21d | 2027-03-02 | 2027-03-29 | PRO-SL-PO-170, PRO-SL-MF-130 |
|  | 1DL | **1st Material Delivery & Site Inspection** |  | 2026-12-26 | 2027-04-12 |  |
|  | 1 | **Cabling Works** |  | 2026-12-26 | 2026-12-31 |  |
| PRO-SL-1DL-100 |  | 1ST Material Delivery for Lighting Cables of Street Lighting Network | 6d | 2026-12-26 | 2026-12-31 | PRO-SL-MF-100 |
|  | 2 | **Lighting Poles Works** |  | 2027-01-19 | 2027-02-08 |  |
| PRO-SL-1DL-110 |  | 1ST Material Delivery for Lighting Poles Foundations of Street Lighting Network | 6d | 2027-01-19 | 2027-01-25 | PRO-SL-MF-110, PRO-SL-1DL-100 |
| PRO-SL-1DL-120 |  | 1ST Material Delivery for Lighting Poles of Street Lighting Network | 6d | 2027-01-26 | 2027-02-01 | PRO-SL-MF-120, PRO-SL-1DL-110 |
| PRO-SL-1DL-140 |  | 1ST Material Delivery for Lighting Fixtures of Street Lighting Network | 6d | 2027-02-02 | 2027-02-08 | PRO-SL-MF-150, PRO-SL-MF-140, PRO-SL-1DL-120 |
|  | 3 | **Distribution Panel Board** |  | 2027-02-23 | 2027-03-01 |  |
| PRO-SL-1DL-160 |  | 1ST Material Delivery for Distrubution Panel Boards of Street Lighting Network | 6d | 2027-02-23 | 2027-03-01 | PRO-SL-MF-160, PRO-SL-1DL-140 |
|  | 5 | **Termination and Testing Works** |  | 2027-03-02 | 2027-04-05 |  |
| PRO-SL-1DL-130 |  | 1ST Material Delivery for Fuse Boxes of Street Lighting Network | 6d | 2027-03-02 | 2027-03-08 | PRO-SL-MF-130, PRO-SL-1DL-160 |
| PRO-SL-1DL-170 |  | 1ST Material Delivery for Cable Lugs of Street Lighting Network | 6d | 2027-03-30 | 2027-04-05 | PRO-RD-MF-160, PRO-SL-MF-170, PRO-SL-1DL-130 |
|  | 4 | **Earthing System Works** |  | 2027-04-06 | 2027-04-12 |  |
| PRO-SL-1DL-150 |  | 1ST Material Delivery for Lighting Earthing of Street Lighting Network | 6d | 2027-04-06 | 2027-04-12 | PRO-SL-MF-150 FF, PRO-SL-MF-150 SS, PRO-SL-1DL-170 |
|  | DL | **Material Delivery & Site Inspection** |  | 2027-01-02 | 2027-04-29 |  |
|  | 1 | **Cabling Works** |  | 2027-01-02 | 2027-01-25 |  |
| PRO-R25-SL-DL-100 |  | Material Delivery & Site Inspection of Lighting Cables for Street Lighting Network | 21d | 2027-01-02 | 2027-01-25 | PRO-CTV-PO-100, PRO-SL-1DL-100 |
|  | 2 | **Lighting Poles Works** |  | 2027-01-19 | 2027-03-08 |  |
| PRO-R25-SL-DL-110 |  | Material Delivery & Site Inspection of Lighting Poles Foundations for Street Lighting Network | 21d | 2027-01-19 | 2027-02-11 | PRO-SL-1DL-110 SS, PRO-R25-SL-DL-100 SS |
| PRO-R25-SL-DL-120 |  | Material Delivery & Site Inspection of Lighting Poles for Street Lighting Network | 21d | 2027-02-13 | 2027-03-08 | PRO-SL-1DL-120, PRO-R25-SL-DL-110 |
| PRO-R25-SL-DL-140 |  | Material Delivery & Site Inspection of Lighting Fixtures for Street Lighting Network | 21d | 2027-02-13 | 2027-03-08 | PRO-SL-1DL-140, PRO-R25-SL-DL-120 SS |
|  | 3 | **Distribution Panel Board** |  | 2027-03-13 | 2027-04-05 |  |
| PRO-R25-SL-DL-160 |  | Material Delivery & Site Inspection of Distrubution Panel Boards for Street Lighting Network | 21d | 2027-03-13 | 2027-04-05 | PRO-R25-IR-DL-150, PRO-SL-1DL-160, PRO-R25-SL-DL-140 |
|  | 4 | **Termination and Testing Works** |  | 2027-04-06 | 2027-04-29 |  |
| PRO-R25-SL-DL-130 |  | Material Delivery & Site Inspection of Fuse Boxes for Street Lighting Network | 21d | 2027-04-06 | 2027-04-29 | PRO-SL-1DL-130, PRO-R25-SL-DL-160 |
| PRO-R25-SL-DL-170 |  | Material Delivery & Site Inspection of Cable Lugs for Street Lighting Network | 21d | 2027-04-06 | 2027-04-29 | PRO-SL-1DL-170 SS, PRO-R25-SL-DL-130 SS |
|  | 5 | **Earthing System Works** |  | 2027-04-06 | 2027-04-29 |  |
| PRO-R25-SL-DL-150 |  | Material Delivery & Site Inspection of Lighting Earthing for Street Lighting Network | 21d | 2027-04-06 | 2027-04-29 | PRO-SL-1DL-150 FF, PRO-SL-1DL-150 SS, PRO-R25-SL-DL-170 SS |
|  | TE | **Telecom and Light Current Network** |  | 2026-12-09 | 2027-03-30 |  |
|  | PO | **Issuance of Purchase Orders** |  | 2026-12-09 | 2026-12-31 |  |
|  | 1 | **Ducts Works** |  | 2026-12-09 | 2026-12-16 |  |
| PRO-TE-PO-100 |  | Issuance of Purchase Order for Ducts forTelecom Network | 7d | 2026-12-09 | 2026-12-16 | ENG-MT-TE-A-100, ENG-SH-TE-A-110, ENG-MS-TE-A-110, PRO-SL-PO-170 |
|  | 3 | **Manholes Works** |  | 2026-12-09 | 2026-12-16 |  |
| PRO-TE-PO-110 |  | Issuance of Purchase Order for Manholes forTelecom Network | 7d | 2026-12-09 | 2026-12-16 | ENG-MT-TE-A-110, ENG-SH-TE-A-110, PRO-TE-PO-100 SS |
|  | 2 | **CCTV, Telephone, MSN, ACs System Works** |  | 2026-12-09 | 2026-12-31 |  |
| PRO-CTV-PO-100 |  | Issuance of Purchase Order for Civil and Finishes Works of CCTV Complete System | 20d | 2026-12-09 | 2026-12-31 | ENG-MT-CTV-A-100, ENG-SH-MSN-A-120, ENG-SH-CTV-A-110, PRO-TE-PO-110 SS, ENG-MS-CTV-A-110 |

| ID | WBS | Task | Duration | Start | Finish | Predecessors |
| --- | --- | --- | --- | --- | --- | --- |
|  | MF | **Manufacturing of Material** |  | 2026-12-17 | 2027-03-08 |  |
|  | 1 | **Ducts Works** |  | 2026-12-17 | 2027-01-09 |  |
| PRO-TE-MF-100 |  | Manufacturing of Ducts for Telecom Network | 20d | 2026-12-17 | 2027-01-09 | PRO-TE-PO-100 |
|  | 3 | **Manholes Works** |  | 2027-01-10 | 2027-02-01 |  |
| PRO-TE-MF-110 |  | Manufacturing of Manholes for Telecom Network | 20d | 2027-01-10 | 2027-02-01 | PRO-TE-PO-110, PRO-TE-MF-100 |
|  | 2 | **CCTV, Telephone, MSN, ACs System Works** |  | 2027-02-02 | 2027-03-08 |  |
| PRO-CTV-MF-100 |  | Manufacturing of Civil and Finishes Works for CCTV Complete System | 30d | 2027-02-02 | 2027-03-08 | PRO-CTV-PO-100, PRO-TE-MF-110 |
|  | 1DL | **1st Material Delivery & Site Inspection** |  | 2027-01-10 | 2027-03-18 |  |
|  | 1 | **Ducts Works** |  | 2027-01-10 | 2027-01-16 |  |
| PRO-TE-1DL-100 |  | 1ST Material Delivery for Ducts of Telecom Network | 6d | 2027-01-10 | 2027-01-16 | PRO-TE-MF-100 |
|  | 3 | **Manholes Works** |  | 2027-02-02 | 2027-02-08 |  |
| PRO-TE-1DL-110 |  | 1ST Material Delivery for Manholes of Telecom Network | 6d | 2027-02-02 | 2027-02-08 | PRO-TE-MF-110, PRO-TE-1DL-100 |
|  | 2 | **CCTV, Telephone, MSN, ACs System Works** |  | 2027-03-13 | 2027-03-18 |  |
| PRO-CTV-1DL-100 |  | 1ST Material Delivery for Civil and Finishes Works of CCTV Complete System | 6d | 2027-03-13 | 2027-03-18 | PRO-CTV-MF-100, PRO-TE-1DL-110 |
|  | DL | **Material Delivery & Site Inspection** |  | 2027-01-17 | 2027-03-30 |  |
|  | 1 | **Ducts Works** |  | 2027-01-17 | 2027-02-02 |  |
| PRO-R25-TE-DL-100 |  | Material Delivery & Site Inspection for Ducts of Telecom Network | 15d | 2027-01-17 | 2027-02-02 | PRO-TE-1DL-100 |
|  | 3 | **Manholes Works** |  | 2027-02-09 | 2027-02-25 |  |
| PRO-R25-TE-DL-110 |  | Material Delivery & Site Inspection of Manholes for Telecom Network | 15d | 2027-02-09 | 2027-02-25 | PRO-R25-TE-DL-100, PRO-TE-1DL-110 |
|  | 2 | **CCTV, Telephone, MSN, ACs System Works** |  | 2027-03-20 | 2027-03-30 |  |
| PRO-R25-CTV-DL-100 |  | Material Delivery & Site Inspection of for Civil and Finishes Works of CCTV Complete System | 10d | 2027-03-20 | 2027-03-30 | PRO-CTV-1DL-100, PRO-R25-TE-DL-110 |
|  | RD | **Road Works** |  | 2026-11-02 | 2027-05-09 |  |
|  | PO | **Issuance of Purchase Orders** |  | 2026-11-02 | 2026-12-20 |  |
|  | 1 | **Road Works** |  | 2026-11-02 | 2026-12-20 |  |
| PRO-RD-PO-100 |  | Issuance of Purchase Order for Subgrade of Road Works | 7d | 2026-11-02 | 2026-11-09 | ENG-MT-RD-A-100, ENG-SH-RD-A-100, ENG-SH-RD-A-110, ENG-MS-RD-A-30, ENG-MS-RD-A-40, ENG-MS-RD-A-10, ENG-MS-RD-A-20 |
| PRO-RD-PO-110 |  | Issuance of Purchase Order for Aggregate Base Course of Road Works | 7d | 2026-11-10 | 2026-11-17 | ENG-MT-RD-A-110, ENG-SH-RD-A-100, ENG-SH-RD-A-110, PRO-RD-PO-100, ENG-MS-MRK-A-10, ENG-MS-TSB-A-10 |
| PRO-RD-PO-120 |  | Issuance of Purchase Order for Prime Coat of Road Works | 7d | 2026-11-18 | 2026-11-25 | ENG-MT-RD-A-120, ENG-SH-RD-A-100, ENG-SH-RD-A-110, PRO-RD-PO-110 |
| PRO-RD-PO-130 |  | Issuance of Purchase Order for Asphaltic Base Course Layer of Road Works | 7d | 2026-11-26 | 2026-12-03 | ENG-MT-RD-A-130, ENG-SH-RD-A-100, ENG-SH-RD-A-110, PRO-RD-PO-120 |
| PRO-RD-PO-180 |  | Issuance of Purchase Order for Asphaltic Wearing Course Layer for Roads Network | 7d | 2026-12-05 | 2026-12-12 | ENG-MT-RD-A-160, ENG-SH-RD-A-100, ENG-SH-RD-A-110, PRO-RD-PO-130 |
| PRO-RD-PO-190 |  | Issuance of Purchase Order for Tack Coat Layer for Roads Network | 7d | 2026-12-13 | 2026-12-20 | ENG-MT-RD-A-170, ENG-SH-RD-A-100, ENG-SH-RD-A-110, PRO-RD-PO-180 |
|  | 2 | **Pavement Works** |  | 2026-11-18 | 2026-12-03 |  |
| PRO-RD-PO-140 |  | Issuance of Purchase Order for Interlock Tiles of Landscaping | 7d | 2026-11-18 | 2026-11-25 | ENG-MT-RD-A-140, ENG-SH-HS-A-110, ENG-MS-HS-A-10, PRO-RD-PO-120 SS |
| PRO-RD-PO-150 |  | Issuance of Purchase Order for Curbstones of Landscaping | 7d | 2026-11-26 | 2026-12-03 | ENG-MT-RD-A-150, ENG-SH-HS-A-110, PRO-RD-PO-140 |
|  | 3 | **Traffic Signs Boards and Roads Marking** |  | 2026-12-05 | 2026-12-20 |  |
| PRO-RD-PO-160 |  | Issuance of Purchase Order for Traffic Signs Boards of Road Works | 7d | 2026-12-05 | 2026-12-12 | ENG-MT-TS-A-100, ENG-SH-TSB-A-100, PRO-RD-PO-150, ENG-MS-TSB-A-10 |
| PRO-RD-PO-170 |  | Issuance of Purchase Order for Road Markings of Road Works | 7d | 2026-12-13 | 2026-12-20 | ENG-MT-TS-A-110, ENG-SH-MRK-A-110, PRO-RD-PO-160, ENG-MS-MRK-A-10 |
|  | MF | **Manufacturing of Material** |  | 2026-11-10 | 2027-03-27 |  |
|  | 1 | **Road Works** |  | 2026-11-10 | 2027-02-22 |  |
| PRO-RD-MF-100 |  | Manufacturing of Subgrade for Road Works | 10d | 2026-11-10 | 2026-11-21 | PRO-RD-PO-100 |
| PRO-RD-MF-110 |  | Manufacturing of Aggregate Base Course for Road Works | 20d | 2026-11-22 | 2026-12-14 | PRO-RD-PO-110, PRO-RD-MF-100 |
| PRO-RD-MF-120 |  | Manufacturing of Prime Coat for Road Works | 20d | 2026-12-15 | 2027-01-06 | PRO-RD-PO-120, PRO-RD-MF-110 |
| PRO-RD-MF-190 |  | Manufacturing of Tack Coat Layer for Roads Network | 50d | 2026-12-21 | 2027-02-16 | PRO-RD-PO-190 |
| PRO-RD-MF-130 |  | Manufacturing of Asphaltic Base Course Layer for Road Works | 20d | 2027-01-07 | 2027-01-30 | PRO-RD-PO-130, PRO-RD-MF-120 |
| PRO-RD-MF-180 |  | Manufacturing of Asphaltic Wearing Course Layer for Roads Network | 20d | 2027-01-31 | 2027-02-22 | PRO-RD-PO-180, PRO-RD-MF-130 |
|  | 2 | **Pavement Works** |  | 2027-02-17 | 2027-03-16 |  |
| PRO-RD-MF-140 |  | Manufacturing of Interlock Tiles for Landscaping | 21d | 2027-02-17 | 2027-03-16 | PRO-RD-PO-140, PRO-RD-MF-190 |
| PRO-RD-MF-150 |  | Manufacturing of Curbstones for Landscaping | 20d | 2027-02-17 | 2027-03-15 | PRO-RD-PO-150, PRO-RD-MF-140 SS |
|  | 3 | **Traffic Signs Boards and Roads Marking** |  | 2026-12-13 | 2027-03-27 |  |
| PRO-RD-MF-160 |  | Manufacturing of Traffic Signs Boards for Road Works | 80d | 2026-12-13 | 2027-03-18 | PRO-RD-PO-160 |
| PRO-RD-MF-170 |  | Manufacturing of Road Markings for Road Works | 80d | 2026-12-21 | 2027-03-27 | PRO-RD-PO-170 |
|  | 1DL | **1st Material Delivery & Site Inspection** |  | 2026-11-22 | 2027-04-18 |  |
|  | 1 | **Road Works** |  | 2026-11-22 | 2027-03-14 |  |
| PRO-RD-1DL-100 |  | 1ST Material Delivery for Subgrade of Road Works | 7d | 2026-11-22 | 2026-11-29 | PRO-RD-MF-100 |
| PRO-RD-1DL-110 |  | 1ST Material Delivery for Aggregate Base Course of Road Works | 7d | 2026-12-15 | 2026-12-22 | PRO-RD-MF-110, PRO-RD-1DL-100 |
| PRO-RD-1DL-120 |  | 1ST Material Delivery for Prime Coat of Road Works | 15d | 2027-01-07 | 2027-01-24 | PRO-RD-MF-120, PRO-RD-1DL-110 |
| PRO-RD-1DL-130 |  | 1ST Material Delivery for Asphaltic Base Course Layer of Road Works | 7d | 2027-01-31 | 2027-02-07 | PRO-RD-MF-130, PRO-RD-1DL-120 |
| PRO-RD-1DL-180 |  | 1ST Material Delivery for Asphaltic Wearing Course Layer for Roads Network | 7d | 2027-02-23 | 2027-03-02 | PRO-RD-MF-180, PRO-RD-1DL-130 |
| PRO-RD-1DL-190 |  | 1ST Material Delivery for Tack Coat Layer for Roads Network | 7d | 2027-03-03 | 2027-03-14 | PRO-RD-MF-190, PRO-RD-1DL-180 |
|  | 2 | **Pavement Works** |  | 2027-03-17 | 2027-04-01 |  |
| PRO-RD-1DL-140 |  | 1ST Material Delivery for Interlock Tiles of Landscaping | 7d | 2027-03-17 | 2027-03-24 | PRO-RD-MF-140, PRO-RD-1DL-190 |
| PRO-RD-1DL-150 |  | 1ST Material Delivery for Curbstones of Landscaping | 7d | 2027-03-25 | 2027-04-01 | PRO-RD-MF-150, PRO-RD-1DL-140 |
|  | 3 | **Traffic Signs Boards and Roads Marking** |  | 2027-04-03 | 2027-04-18 |  |
| PRO-RD-1DL-170 |  | 1ST Material Delivery for Road Markings of Road Works | 7d | 2027-04-03 | 2027-04-10 | PRO-RD-MF-170, PRO-RD-1DL-150 |
| PRO-RD-1DL-160 |  | 1ST Material Delivery for Traffic Signs Boards of Road Works | 7d | 2027-04-11 | 2027-04-18 | PRO-RD-MF-160, PRO-RD-1DL-170 |
|  | DL | **Material Delivery & Site Inspection** |  | 2026-11-30 | 2027-05-09 |  |
|  | 1 | **Pre-Bituminous Construction** |  | 2026-11-30 | 2027-01-17 |  |
| PRO-R25-RD-DL-100 |  | Material Delivery & Site Inspection for Subgrade of Road Works | 21d | 2026-11-30 | 2026-12-23 | PRO-RD-1DL-100 |
| PRO-R25-RD-DL-110 |  | Material Delivery & Site Inspection for Aggregate Base Course of Road Works | 21d | 2026-12-24 | 2027-01-17 | PRO-RD-1DL-110, PRO-R25-RD-DL-100 |
|  | 4 | **Bituminous Construction** |  | 2027-01-25 | 2027-03-31 |  |
| PRO-R25-RD-DL-160 |  | Material Delivery & Site Inspection for Prime Coat Layer of Road Works | 11d | 2027-01-25 | 2027-02-06 | PRO-RD-1DL-120, PRO-R25-RD-DL-110 |

| ID | WBS | Task | Duration | Start | Finish | Predecessors |
| --- | --- | --- | --- | --- | --- | --- |
| PRO-R25-RD-DL-170 |  | Material Delivery & Site Inspection for Asphaltic Base Course Layer of Road Works | 11d | 2027-02-08 | 2027-02-20 | PRO-RD-1DL-130, PRO-R25-RD-DL-160 |
| PRO-RD-DL-200 |  | Material Delivery for Asphaltic Wearing Course Layer for Roads Network | 11d | 2027-03-03 | 2027-03-18 | PRO-RD-1DL-180, PRO-R25-RD-DL-170 |
| PRO-RD-DL-210 |  | Material Delivery for Tack Coat Layer for Roads Network | 11d | 2027-03-20 | 2027-03-31 | PRO-RD-1DL-190, PRO-RD-DL-200 |
|  | 2 | **Pavement Works** |  | 2027-04-01 | 2027-04-26 |  |
| PRO-R25-RD-DL-120 |  | Material Delivery & Site Inspection of Interlock Tiles for Landscaping | 11d | 2027-04-01 | 2027-04-13 | PRO-RD-1DL-140, PRO-RD-DL-210 |
| PRO-R25-RD-DL-130 |  | Material Delivery & Site Inspection of Curbstones for Landscaping | 11d | 2027-04-14 | 2027-04-26 | PRO-RD-1DL-150, PRO-R25-RD-DL-120 |
|  | 3 | **Traffic Signs Boards and Roads Marking** |  | 2027-04-14 | 2027-05-09 |  |
| PRO-R25-RD-DL-150 |  | Material Delivery & Site Inspection of Road Markings For Road Works | 11d | 2027-04-14 | 2027-04-26 | PRO-LV-TT-DL-100, PRO-RD-1DL-170 SS, PRO-R25-RD-DL-130 SS |
| PRO-R25-RD-DL-140 |  | Material Delivery & Site Inspection of Traffic Signs Boards For Road Works | 11d | 2027-04-27 | 2027-05-09 | PRO-RD-1DL-160, PRO-R25-RD-DL-150 |
|  | 1 | **Superstructure Works** |  | 2026-11-02 | 2027-01-02 |  |
|  | 1 | **Issuance of Purchase Orders** |  | 2026-11-02 | 2026-11-14 |  |
|  | SL1 | **Water Pump Station** |  | 2026-11-02 | 2026-11-05 |  |
| PRO-LS-CV-PO-20 |  | Issuance of Purchase Order for Works for Water Pump Station | 4d | 2026-11-02 | 2026-11-05 | ENG-MT-SLS-CV-A-110, ENG-SH-LS-A-170, ENG-MS-LS-A-180 |
|  | SL11 | **Storage Tank (TSE)** |  | 2026-11-07 | 2026-11-14 |  |
| PRO-TSE-CV-PO-30 |  | Issuance of Purchase Order for Works for Storage Tank (TSE) | 7d | 2026-11-07 | 2026-11-14 | ENG-MT-TSE-CV-A-140, ENG-SH-ST-A-180, PRO-LS-CV-PO-20, ENG-MS-ST-A-190 |
|  | SL111 | **Control Room** |  | 2026-11-07 | 2026-11-14 |  |
| PRO-TSE-CV-PO-40 |  | Issuance of Purchase Order for Works for Control Room | 7d | 2026-11-07 | 2026-11-14 | ENG-SH-ST-A-190, ENG-MT-TSE-CV-A-150, PRO-TSE-CV-PO-30 SS, ENG-MS-ST-A-200 |
|  | SL | **Sewage Pump Stations** |  | 2026-11-07 | 2026-11-14 |  |
| PRO-SPS-CV-PO-10 |  | Issuance of Purchase Order for Works of Sewage Pump Station | 7d | 2026-11-07 | 2026-11-14 | ENG-MT-PS-CV-A-150, ENG-SH-SPS-A-160, PRO-TSE-CV-PO-40 SS, ENG-MS-SPS-A-170 |
|  | SL12 | **Gaurd Room** |  | 2026-11-07 | 2026-11-14 |  |
| PRO-GR-CV-PO-40 |  | Issuance of Purchase Order for Materials for Gaurd Room | 7d | 2026-11-07 | 2026-11-14 | ENG-MT-GR-CV-A-130, ENG-SH-GR-A-190, PRO-SPS-CV-PO-10 SS, ENG-MS-GR-A-210 |
|  | SL121 | **Boundary Fence** |  | 2026-11-07 | 2026-11-14 |  |
| PRO-FE-CV-PO-50 |  | Issuance of Purchase Order for Materials for Boundary Fence | 7d | 2026-11-07 | 2026-11-14 | ENG-MT-FE-CV-A-120, ENG-SH-GR-A-200, PRO-GR-CV-PO-40 SS, ENG-MS-GR-A-220 |
|  | 2 | **Manufacturing of Material** |  | 2026-11-07 | 2026-12-08 |  |
|  | SL1 | **Water Pump Station** |  | 2026-11-07 | 2026-11-14 |  |
| PRO-LS-CV-MF-30 |  | Manufacturing of Works for Works for Water Pump Station | 7d | 2026-11-07 | 2026-11-14 | PRO-LS-CV-PO-20 |
|  | SL11 | **Storage Tank (TSE)** |  | 2026-11-15 | 2026-11-30 |  |
| PRO-TSE-CV-MF-40 |  | Manufacturing of Works for Storage Tank (TSE) | 14d | 2026-11-15 | 2026-11-30 | PRO-TSE-CV-PO-30, PRO-LS-CV-MF-30 |
|  | SL111 | **Control Room** |  | 2026-11-15 | 2026-12-08 |  |
| PRO-TSE-CV-MF-50 |  | Manufacturing of Works for Control Room | 21d | 2026-11-15 | 2026-12-08 | PRO-TSE-CV-PO-40, PRO-TSE-CV-MF-40 SS |
|  | SL | **Sewage Pump Stations** |  | 2026-11-15 | 2026-12-08 |  |
| PRO-SPS-CV-MF-10 |  | Manufacturing of Works of Sewage Pump Station | 21d | 2026-11-15 | 2026-12-08 | PRO-SPS-CV-PO-10, PRO-TSE-CV-MF-50 SS |
|  | SL12 | **Gaurd Room** |  | 2026-11-15 | 2026-12-08 |  |
| PRO-GR-CV-MF-50 |  | Manufacturing of Materials for Gaurd Room | 21d | 2026-11-15 | 2026-12-08 | PRO-GR-CV-PO-40, PRO-SPS-CV-MF-10 SS |
|  | SL121 | **Boundary Fence** |  | 2026-11-15 | 2026-12-08 |  |
| PRO-FE-CV-MF-60 |  | Manufacturing of Materials for Boundary Fence | 21d | 2026-11-15 | 2026-12-08 | PRO-FE-CV-PO-50, PRO-GR-CV-MF-50 SS |
|  | 3 | **1st Material Delivery & Site Inspection** |  | 2026-11-07 | 2026-12-16 |  |
|  | SL1 | **Water Pump Station** |  | 2026-11-07 | 2026-11-12 |  |
| PRO-LS-CV-1DL-40 |  | 1ST Material Delivery for Works of Water Pump Station | 6d | 2026-11-07 | 2026-11-12 | PRO-LS-CV-MF-30 SS |
|  | SL11 | **Storage Tank (TSE)** |  | 2026-12-01 | 2026-12-08 |  |
| PRO-TSE-CV-1DL-50 |  | 1ST Material Delivery for Works for Storage Tank (TSE) | 7d | 2026-12-01 | 2026-12-08 | PRO-TSE-CV-MF-40, PRO-LS-CV-1DL-40 |
|  | SL111 | **Control Room** |  | 2026-12-09 | 2026-12-16 |  |
| PRO-TSE-CV-1DL-60 |  | 1ST Material Delivery for Works for Control Room | 7d | 2026-12-09 | 2026-12-16 | PRO-TSE-CV-MF-50, PRO-TSE-CV-1DL-50 SS |
|  | SL | **Sewage Pump Stations** |  | 2026-12-09 | 2026-12-16 |  |
| PRO-SPS-CV-1DL-10 |  | 1ST Material Delivery for Works of Sewage Pump Station | 7d | 2026-12-09 | 2026-12-16 | PRO-SPS-CV-MF-10, PRO-TSE-CV-1DL-60 SS |
|  | SL12 | **Gaurd Room** |  | 2026-12-09 | 2026-12-16 |  |
| PRO-GR-CV-1DL-60 |  | 1ST Material Delivery for Materials for Gaurd Room | 7d | 2026-12-09 | 2026-12-16 | PRO-GR-CV-MF-50, PRO-SPS-CV-1DL-10 SS |
|  | SL121 | **Boundary Fence** |  | 2026-12-09 | 2026-12-16 |  |
| PRO-FE-CV-1DL-70 |  | 1ST Material Delivery for Materials for Boundary Fence | 7d | 2026-12-09 | 2026-12-16 | PRO-FE-CV-MF-60, PRO-GR-CV-1DL-60 SS |
|  | 4 | **Material Delivery & Site Inspection** |  | 2026-11-07 | 2027-01-02 |  |
|  | SL1 | **Water Pump Station** |  | 2026-11-07 | 2026-11-17 |  |
| PRO-LS-CV-DL-50 |  | Material Delivery & Site Inspection for Works for Water Pump Station | 10d | 2026-11-07 | 2026-11-17 | PRO-LS-CV-1DL-40 SS |
|  | SL11 | **Storage Tank (TSE)** |  | 2026-11-18 | 2026-12-19 |  |
| PRO-TSE-CV-DL-60 |  | Material Delivery & Site Inspection for Works for Storage Tank (TSE) | 27d | 2026-11-18 | 2026-12-19 | PRO-LS-CV-DL-50 |
|  | SL111 | **Control Room** |  | 2026-12-17 | 2027-01-02 |  |
| PRO-TSE-CV-DL-70 |  | Material Delivery & Site Inspection for Works for Control Room | 14d | 2026-12-17 | 2027-01-02 | PRO-TSE-CV-1DL-60, PRO-TSE-CV-DL-60 SS |
|  | SL | **Sewage Pump Stations** |  | 2026-12-17 | 2027-01-02 |  |
| PRO-SPS-CV-DL-10 |  | Material Delivery & Site Inspection for Works for Pump Station | 14d | 2026-12-17 | 2027-01-02 | PRO-SPS-CV-1DL-10, PRO-TSE-CV-DL-70 SS |
|  | SL12 | **Gaurd Room** |  | 2026-12-17 | 2027-01-02 |  |
| PRO-GR-CV-DL-70 |  | Material Delivery & Site Inspection for Materials for Gaurd Room | 14d | 2026-12-17 | 2027-01-02 | PRO-GR-CV-1DL-60, PRO-SPS-CV-DL-10 SS |
|  | SL121 | **Boundary Fence** |  | 2026-12-17 | 2027-01-02 |  |
| PRO-FE-CV-DL-80 |  | Material Delivery & Site Inspection for Materials for Boundary Fence | 14d | 2026-12-17 | 2027-01-02 | PRO-FE-CV-1DL-70, PRO-GR-CV-DL-70 SS |
|  | IR1 | **Softscape and Planting Works** |  | 2026-11-18 | 2027-03-04 |  |
|  | PO | **Issuance of Purchase Orders** |  | 2026-11-18 | 2026-12-01 |  |
|  | 1 | **Main Line Pipes** |  | 2026-11-18 | 2026-12-01 |  |
| PRO-IR-PO-140 |  | Issuance of Purchase Order for Softscape and Planting Works | 6d | 2026-11-18 | 2026-11-24 | ENG-MT-IR-ML-A-140, PRO-LV-DP-PO-100 |
| PRO-IR-PO-150 |  | Issuance of Purchase Order for Site Furnishings (Seating Bench,Stone Boulders and Gravel) | 6d | 2026-11-25 | 2026-12-01 | ENG-MT-IR-ML-A-150, PRO-IR-PO-140 |
|  | MF | **Manufacturing of Material** |  | 2026-11-25 | 2027-02-09 |  |
|  | 1 | **Main Line Pipes** |  | 2026-11-25 | 2027-02-09 |  |
| PRO-IR-MF-140 |  | Manufacturing of Softscape and Planting Works | 60d | 2026-11-25 | 2027-02-02 | PRO-IR-PO-140 |

| ID | WBS | Task | Duration | Start | Finish | Predecessors | Complete |
| --- | --- | --- | --- | --- | --- | --- | --- |
| PRO-IR-MF-150 |  | Manufacturing of Valves for Site Furnishings (Seating Bench,Stone Boulders and Gravel) | 60d | 2026-12-02 | 2027-02-09 | PRO-IR-PO-150 |  |
|  | 1DL | **1st Material Delivery & Site Inspection** |  | 2027-02-03 | 2027-02-16 |  |  |
|  | 1 | **Main Line Pipes** |  | 2027-02-03 | 2027-02-16 |  |  |
| PRO-IR-1DL-140 |  | 1ST Material Delivery for Softscape and Planting Works | 6d | 2027-02-03 | 2027-02-09 | PRO-IR-MF-140 |  |
| PRO-IR-1DL-150 |  | 1ST Material Delivery for Site Furnishings (Seating Bench,Stone Boulders and Gravel) | 6d | 2027-02-10 | 2027-02-16 | PRO-IR-MF-150, PRO-IR-1DL-140 |  |
|  | DL | **Material Delivery & Site Inspection** |  | 2027-02-10 | 2027-03-04 |  |  |
|  | 1 | **Main Line Pipes** |  | 2027-02-10 | 2027-03-04 |  |  |
| PRO-R25-IR-DL-140 |  | Material Delivery & Site Inspection of Softscape and Planting Works | 10d | 2027-02-10 | 2027-02-21 | PRO-R25-SD-DL-140, PRO-IR-1DL-140 |  |
| PRO-R25-IR-DL-150 |  | Material Delivery & Site Inspection of Site Furnishings (Seating Bench,Stone Boulders and Gravel) | 10d | 2027-02-22 | 2027-03-04 | PRO-IR-1DL-150, PRO-R25-IR-DL-140 |  |
|  | LL | **Long Lead Time Items** |  | 2026-11-18 | 2027-06-27 |  |  |
|  | 1 | **Superstructure Works** |  | 2026-11-18 | 2027-06-27 |  |  |
|  | SL | **Sewage Pump Station** |  | 2026-11-18 | 2027-05-13 |  |  |
|  | 1 | **Issuance of Purchase Orders** |  | 2026-11-18 | 2026-11-24 |  |  |
| PRO-SPS-LL-PO-10 |  | Issuance of Purchase Order for Electromechanical Works for Pump Station | 6d | 2026-11-18 | 2026-11-24 | ENG-MT-SPS-MC-A-110, PRO-LV-DP-PO-100, PRO-LV-DP-PO-110 SS |  |
|  | 2 | **Manufacturing of Material** |  | 2026-11-25 | 2027-03-24 |  |  |
| PRO-SPS-LL-MF-10 |  | Manufacturing of Electromechanical Works for Pump Station | 100d | 2026-11-25 | 2027-03-24 | PRO-SPS-LL-PO-10 |  |
|  | 3 | **Material Shipping/Custom Clearance/Delivery** |  | 2027-03-25 | 2027-04-18 |  |  |
| PRO-SPS-LL-SH/DL-10 |  | Material Delivery for Electromechanical Works for Pump Station | 21d | 2027-03-25 | 2027-04-18 | PRO-SPS-LL-MF-10 |  |
|  | 4 | **Material Site Inspection** |  | 2027-04-19 | 2027-05-13 |  |  |
| PRO-SPS-LL-MSI-10 |  | Material Site Inspection for Electromechanical Works for Pump Station | 22d | 2027-04-19 | 2027-05-13 | PRO-SPS-LL-SH/DL-10 |  |
|  | SL1 | **Water Pump Station** |  | 2026-11-25 | 2027-04-15 |  |  |
|  | 1 | **Issuance of Purchase Orders** |  | 2026-11-25 | 2026-12-02 |  |  |
| PRO-LS-LL-PO-20 |  | Issuance of Purchase Order for Electromechanical Works for Water Pump Station | 7d | 2026-11-25 | 2026-12-02 | ENG-MT-SPS-MC-A-110, PRO-LS-CV-PO-20, PRO-SPS-LL-PO-10 |  |
|  | 2 | **Manufacturing of Material** |  | 2026-12-03 | 2027-02-22 |  |  |
| PRO-LS-LL-MF-20 |  | Manufacturing of Electromechanical Works for Water Pump Station | 70d | 2026-12-03 | 2027-02-22 | PRO-LS-LL-PO-20 |  |
|  | 3 | **Material Shipping/Custom Clearance/Delivery** |  | 2027-02-23 | 2027-03-22 |  |  |
| PRO-LS-LL-SH/DL-20 |  | Material Delivery for Electromechanical Works for Water Pump Station | 21d | 2027-02-23 | 2027-03-22 | PRO-LS-LL-MF-20 |  |
|  | 4 | **Material Site Inspection** |  | 2027-03-23 | 2027-04-15 |  |  |
| PRO-LS-LL-MSI-20 |  | Material Site Inspection for Electromechanical Works for Water Pump Station | 21d | 2027-03-23 | 2027-04-15 | PRO-LS-LL-SH/DL-20 |  |
|  | SL2 | **Storage Tank (TSE)** |  | 2026-12-03 | 2027-06-27 |  |  |
|  | 1 | **Issuance of Purchase Orders** |  | 2026-12-03 | 2026-12-10 |  |  |
| PRO-TSE-LL-PO-30 |  | Issuance of Purchase Order for Electromechanical Works for Storage Tank (TSE) | 7d | 2026-12-03 | 2026-12-10 | ENG-MT-TSE-MC-A-120, PRO-TSE-CV-PO-30, PRO-LS-LL-PO-20 |  |
|  | 2 | **Manufacturing of Material** |  | 2026-12-12 | 2027-05-03 |  |  |
| PRO-TSE-LL-MF-30 |  | Manufacturing of Electromechanical Works for Storage Tank (TSE) | 120d | 2026-12-12 | 2027-05-03 | PRO-TSE-LL-PO-30 |  |
|  | 3 | **Material Shipping/Custom Clearance/Delivery** |  | 2027-05-04 | 2027-06-02 |  |  |
| PRO-TSE-LL-SH/DL-30 |  | Material Delivery for Electromechanical Works for Storage Tank (TSE) | 21d | 2027-05-04 | 2027-06-02 | PRO-TSE-LL-MF-30 |  |
|  | 4 | **Material Site Inspection** |  | 2027-06-03 | 2027-06-27 |  |  |
| PRO-TSE-LL-MSI-30 |  | Material Site Inspection for Electromechanical Works for Storage Tank (TSE) | 21d | 2027-06-03 | 2027-06-27 | PRO-TSE-LL-SH/DL-30 |  |
|  | CON | **Construction Works** |  | 2026-03-10 | 2027-06-30 |  |  |
|  | INF | **Infrastructure Networks** |  | 2026-03-10 | 2027-06-28 |  |  |
|  | IN | **Internal** |  | 2026-03-10 | 2027-06-28 |  |  |
|  | 1 | **Alignment-RD-01** |  | 2026-03-10 | 2027-06-08 |  |  |
|  | EW | **Earthworks** |  | 2026-03-10 | 2027-01-13 |  |  |
|  | EW | **Earthworks** |  | 2026-03-10 | 2027-01-13 |  |  |
| CO-EW-210 |  | Excavation and Backfilling Works Upto Design Level for Earthworks for Alignment-RD-01(Completed) | 81d | 2026-03-10 A | 2026-06-22 A | MS-CS-PS SS, MOB-30 SS, MOB-20 SS, MOB-80 SS, MOB-40 SS, MOB-50 SS, MOB-60 SS, MOB-10 SS, MOB-70 SS, PRE-CON-MDC-10 SS, PRE-CON-MDC-20 SS, PRE-CON-MDC-30 SS, PRE-CON-MDC-40 SS, PRE-CON-MDC-50 SS, PRE-CON-MDC-60 SS, PRE-CON-MDC-70 SS, PRE-CON-MDC-80 SS, MS-CS-IR SS | 100% |
| CO-EW-210_R |  | Excavation and Backfilling Works Upto Design Level for Earthworks for Alignment-RD-01(Remaining) | 20d | 2026-07-01 A | 2026-07-15 A | MS-CS-PS SS, MOB-30 SS, MOB-20 SS, MOB-80 SS, MOB-40 SS, MOB-50 SS, MOB-60 SS, MOB-10 SS, MOB-70 SS, PRE-CON-MDC-10 SS, PRE-CON-MDC-20 SS, PRE-CON-MDC-30 SS, PRE-CON-MDC-40 SS, PRE-CON-MDC-50 SS, PRE-CON-MDC-60 SS, PRE-CON-MDC-70 SS, PRE-CON-MDC-80 SS, MS-CS-IR SS, CO-EW-210, PRO-SD-PO-110, MS-MM-120 | 100% |
| CO-EW-210_R01 |  | Excavation and Backfilling Works Upto Design Level for Earthworks for Alignment-RD-01(Remaining)-part1 | 20d | 2026-08-31 A | 2027-01-13 | CO-EW-210_R, CO-SD-ML-220 | 35% |
|  | SD | **Storm Drainage Network** |  | 2026-10-20 | 2027-01-11 |  |  |
|  | MH | **Manholes** |  | 2026-11-02 | 2026-12-19 |  |  |
| CO-SD-MH-230 |  | Trench Excavation and Bedding Works for Manholes of Storm Drainage Network for Alignment-RD-01 | 12d | 2026-11-02 | 2026-11-15 | ENG-MT-SD-ML-A-100, MS-CS-SD SS, ENG-MS-SD-ML-A-110, ENG-MT-SD-ML-A-110, ENG-SH-SD-ML-A-110, MS-MM-130, MS-MM-140, MS-CF-EBL, MS-CF-MOB |  |
| CO-SD-MH-240 |  | Install RC Footing Works for Manholes of Storm Drainage Network for Alignment-RD-01 | 9d | 2026-11-19 | 2026-11-29 | CO-SD-MH-230, PRO-R25-SD-DL-100 FF, PRO-SD-1DL-100 |  |
| CO-SD-MH-250 |  | Install RC Wall Rings & Slab Works for Manholes of Storm Drainage Network for Alignment-RD-01 | 7d | 2026-11-30 | 2026-12-07 | CO-SD-MH-240, PRO-SD-1DL-100 |  |
| CO-SD-MH-260 |  | Backfilling Works for Manholes of Storm Drainage Network for Alignment-RD-01 | 10d | 2026-12-08 | 2026-12-19 | CO-SD-MH-250 |  |
|  | ML | **Main Line Sections** |  | 2026-10-20 | 2026-12-26 |  |  |
| CO-SD-ML-140 |  | Trench Excavation and Bedding Works for Main Lines of Storm Drainage Network for Alignment-RD-01 | 8d | 2026-10-20 A | 2026-12-08 | ENG-SH-SD-ML-A-110, ENG-MS-SD-ML-A-110, ENG-MT-SD-ML-A-110, MS-CS-SD SS, MS-MM-130, MS-MM-140, CO-SD-MH-250 SS, CO-SD-MH-230 SS, CO-SD-MH-230 FF |  |
| CO-SD-ML-150 |  | Pipes Laying Works for Main Lines of Storm Drainage Network for Alignment-RD-01 | 8d | 2026-10-20 A | 2026-12-16 | CO-SD-ML-140 SS, PRO-R25-SD-DL-120 SS, PRO-SD-1DL-110, CO-SD-MH-250 | 5% |
| CO-SD-ML-160 |  | Trench Backfilling and Compaction Works for Main Lines of Storm Drainage Network for Alignment-RD-01 | 8d | 2026-10-20 A | 2026-12-26 | CO-SD-ML-150, CO-SD-MH-260 FF |  |
|  | CB | **Catch Basin Sections** |  | 2026-12-17 | 2027-01-11 |  |  |
| CO-SD-CB-180 |  | Trench Excavation and Bedding Works for Catch Basins of Storm Drainage Network for Alignment-RD-01 | 8d | 2026-12-17 | 2026-12-26 | ENG-MT-SD-CB-A-110, ENG-SH-SD-CB-A-110, ENG-MS-SD-CB-A-110, MS-CS-SD SS, CO-SD-ML-160 SS, MS-MM-130, MS-MM-140 |  |
| CO-SD-CB-190 |  | Installation and Pipes Laying Connection Works for Catch Basins of Storm Drainage Network for Alignment-RD-01 | 7d | 2026-12-27 | 2027-01-03 | CO-SD-CB-180, PRO-R25-SD-DL-110 FF, PRO-R25-SD-DL-130 FF, PRO-SD-1DL-130, PRO-SD-1DL-120 |  |
| CO-SD-CB-200 |  | Trench Backfilling and Compaction Works for Catch Basins of Storm Drainage Network for Alignment-RD-01 | 7d | 2027-01-04 | 2027-01-11 | CO-SD-CB-190 |  |
|  | SW | **Sewage Network** |  | 2026-10-27 | 2027-03-06 |  |  |
|  | 1 | **Manholes** |  | 2026-12-27 | 2027-03-06 |  |  |
| CO-SW-MH-210 |  | Excavation Works for Main Line Manholes of Sewage Network for Alignment-RD-01 | 12d | 2026-12-27 | 2027-01-09 | ENG-MT-SW-ML-A-100, ENG-SH-SW-ML-A-110, MS-CS-SW SS, MS-MM-130, MS-MM-140, ENG-MS-SW-ML-A-110, CO-SD-MH-260, CO-SD-ML-160 |  |
| CO-SW-MH-220 |  | Installation RC Footing Works for Main Line Manholes of Sewage Network for Alignment-RD-01 | 12d | 2027-01-10 | 2027-01-23 | CO-SW-MH-210, PRO-SW-1DL-110, PRO-R25-SW-DL-110 |  |
| CO-SW-MH-230 |  | Install Grp Liner Wall Works for Main Line Manholes of Sewage Network for Alignment-RD-01 | 12d | 2027-01-24 | 2027-02-06 | CO-SW-MH-220 |  |
| CO-SW-MH-240 |  | Pouring Grp Liner Wall Works for Main Line Manholes of Sewage Network for Alignment-RD-01 | 12d | 2027-02-07 | 2027-02-20 | CO-SW-MH-230 |  |
| CO-SW-MH-250 |  | Backfilling Works for Main Line Manholes of Sewage Network for Alignment-RD-01 | 12d | 2027-02-21 | 2027-03-06 | CO-SW-MH-240 |  |
|  | ML | **Main Line Sections** |  | 2026-10-27 | 2027-03-06 |  |  |
| CO-SW-ML-140 |  | Trench Excavation and Bedding Works for Main Lines of Sewage Network for Alignment-RD-01 | 8d | 2026-10-27 A | 2027-01-20 | CO-SD-CB-200, ENG-SH-SW-ML-A-110, ENG-MS-SW-ML-A-110, ENG-MT-SW-ML-A-110, MS-CS-SW SS, CO-EW-210_R, MS-MM-130, MS-MM-140, CO-SW-MH-220 SS | 20% |

| ID | WBS | Task | Duration | Start | Finish | Predecessors | Complete |
| --- | --- | --- | --- | --- | --- | --- | --- |
| CO-SW-ML-150 |  | Pipes Laying Works for Main Lines of Sewage Network for Alignment-RD-01 | 8d | 2026-10-27 A | 2027-01-30 | CO-SW-ML-140, PRO-SW-1DL-100, PRO-R25-SW-DL-100 | 20% |
| CO-SW-ML-160 |  | Trench Backfilling and Compaction Works for Main Lines of Sewage Network for Alignment-RD-01 | 6d | 2026-10-27 A | 2027-03-06 | CO-SW-ML-150, CO-SW-MH-250 FF | 20% |
|  | TSE | **Treated Sewage Effluent (Tse)** |  | 2026-12-20 | 2027-02-06 |  |  |
| CO-TSE-ML-200 |  | Trench Excavation and Bedding Works for Main Lines of Treated Sewage Effluent (Tse) for Alignment-RD-01 | 7d | 2026-12-20 | 2026-12-27 | ENG-SH-TSE-ML-A-120 SS, ENG-MS-TSE-ML-A-120 SS, ENG-MT-IR-ML-A-120 SS, MS-CS-TSE SS, CO-EW-210_R, MS-MM-130, MS-MM-140, CO-SD-MH-230, CO-SD-MH-260 |  |
| CO-TSE-ML-210 |  | Pipes Laying Works for Main Lines of Treated Sewage Effluent (Tse) for Alignment-RD-01 | 17d | 2027-01-02 | 2027-01-20 | CO-TSE-ML-200, PRO-TSE-1DL-120, PRO-R25-TSE-DL-120 |  |
| CO-TSE-ML-230 |  | Trench Backfilling and Compaction Works for Treated Sewage Effluent (Tse) for Alignment-RD-01 | 14d | 2027-01-21 | 2027-02-06 | CO-TSE-ML-210 |  |
|  | PW | **Potable Water Network** |  | 2026-12-20 | 2027-01-25 |  |  |
|  | ML | **Main Line Sections** |  | 2026-12-20 | 2027-01-25 |  |  |
| CO-PW-ML-140 |  | Trench Excavation and Bedding Works for Main Lines of Potable Water Network for Alignment-RD-01 | 6d | 2026-12-20 | 2026-12-26 | ENG-SH-PW-ML-A-110, ENG-MS-PW-ML-A-110, ENG-MT-PW-ML-A-100, MS-CS-PW SS, CO-EW-210_R, MS-MM-130, MS-MM-140, CO-TSE-ML-200 SS |  |
| CO-PW-ML-150 |  | Pipes Laying and accessories for Main Lines of Potable Water Network for Alignment-RD-01 | 6d | 2027-01-12 | 2027-01-18 | CO-PW-ML-140, PRO-PW-1DL-100 SS |  |
| CO-PW-ML-160 |  | Trench Backfilling and Compaction Works for Main Lines of Potable Water Network for Alignment-RD-01 | 6d | 2027-01-19 | 2027-01-25 | CO-PW-ML-150 |  |
|  | VC | **Valve Chamber** |  | 2026-12-22 | 2027-01-25 |  |  |
| CO-PW-VC-230 |  | Excavation Works for Main Line Valves and Valve Chambers of Potable Water Network for Alignment-RD-01 | 4d | 2026-12-22 | 2026-12-26 | ENG-MT-PW-ML-A-110, MS-CS-PW SS, CO-PW-ML-140 SS, CO-PW-ML-140 FF, MS-MM-130, MS-MM-140 |  |
| CO-PW-VC190 |  | Installation of Valve Chambers of Potable Water Network for Alignment-RD-01 | 4d | 2026-12-27 | 2026-12-30 | CO-PW-VC-230 |  |
| CO-PW-VC-240 |  | Installation Works for Valves of Potable Water Network for Alignment-RD-01 | 4d | 2026-12-31 | 2027-01-04 | CO-PW-VC190 |  |
| CO-PW-VC-250 |  | Backfilling Works for Main Line Valves and Valve Chambers of Potable Water Network for Alignment-RD-01 | 4d | 2027-01-21 | 2027-01-25 | CO-PW-VC-240, CO-PW-ML-160 FF |  |
|  | FH | **Fire Hydrant** |  | 2026-12-27 | 2027-01-25 |  |  |
| CO-PW-FH-170 |  | Excavation Works for Fire Hydrants of Potable Water Network for Alignment-RD-01 | 15d | 2026-12-27 | 2027-01-12 | CO-PW-VC-230, ENG-SH-PW-FH-A-110, ENG-MT-PW-FH-A-100, MS-CS-PW SS, CO-EW-210_R, MS-MM-130, MS-MM-140 |  |
| CO-PW-FH-180 |  | Installation Works for Fire Hydrant of Potable Water Network for Alignment-RD-01 | 3d | 2027-01-19 | 2027-01-21 | CO-PW-FH-170, PRO-PW-1DL-120 SS, CO-PW-ML-150 |  |
| CO-PW-FH-190 |  | Trench Backfilling and Compaction Works for Fire Hydrants of Potable Water Network for Alignment-RD-01 | 3d | 2027-01-23 | 2027-01-25 | CO-PW-FH-180, CO-PW-VC-250 FF |  |
|  | IR | **Irrigation Network** |  | 2027-02-07 | 2027-03-23 |  |  |
|  | ML | **Main Line Pipes** |  | 2027-02-07 | 2027-03-23 |  |  |
| CO-IR-ML-150 |  | Trench Excavation and Bedding Works for Main Lines of Irrigation Network for Alignment-RD-01 | 7d | 2027-02-07 | 2027-02-14 | CO-TSE-ML-230, ENG-SH-IR-ML-A-110, ENG-MS-IR-ML-A-110, ENG-MT-IR-ML-A-100, MS-CS-IR SS, CO-EW-210_R, MS-MM-130, MS-MM-140, CO-PW-ML-160, CO-PW-VC-250, CO-PW-FH-180 |  |
| CO-IR-ML-160 |  | Pipes Laying Works for Main Lines of Irrigation Network for Alignment-RD-01 | 8d | 2027-02-15 | 2027-02-23 | CO-IR-ML-150, PRO-IR-1DL-100, CO-PW-ML-150, PRO-R25-IR-DL-100 |  |
| CO-IR-ML-170 |  | Installation Works for Main Line Valves of Irrigation Network for Alignment-RD-01 | 7d | 2027-02-24 | 2027-03-03 | CO-IR-ML-160, ENG-MT-IR-ML-A-110, PRO-IR-1DL-110, PRO-R25-IR-DL-110 |  |
| CO-IR-ML-190 |  | Installation Works for Bulbblers And Sprinklers and Irrigation Control System of Irrigation Network for Alignment-RD-01 | 10d | 2027-03-04 | 2027-03-18 | CO-IR-ML-170 |  |
| CO-IR-ML-180 |  | Trench Backfilling and Compaction Works for Main Lines of Irrigation Network for Alignment-RD-01 | 4d | 2027-03-20 | 2027-03-23 | CO-IR-ML-190 |  |
|  | MV | **Medium Voltage Network** |  | 2027-03-07 | 2027-03-30 |  |  |
|  | CW | **Cabling Works** |  | 2027-03-07 | 2027-03-30 |  |  |
| CO-MV-ML-280 |  | Trench Excavation and Bedding Works for Medium Voltage Network for Alignment-RD-01 | 6d | 2027-03-07 | 2027-03-16 | ENG-SH-MV-A-110, ENG-MS-MV-A-110, MS-CS-MV SS, CO-PW-FH-190, CO-SW-ML-160, CO-SD-CB-200, CO-SD-ML-160, CO-SD-MH-260, CO-PW-VC-250, MS-MM-130, MS-MM-140, CO-PW-ML-160 |  |
| CO-MV-ML-290 |  | Duct Laying Works for Medium Voltage Network for Alignment-RD-01 | 6d | 2027-03-17 | 2027-03-23 | CO-MV-ML-280, PRO-MV-DL-100, PRO-MV-1DL-100 |  |
| CO-MV-ML-300 |  | Trench Backfilling and Compaction Works for Medium Voltage Network for Alignment-RD-01 | 6d | 2027-03-24 | 2027-03-30 | CO-MV-ML-290 |  |
|  | LV | **Low Voltage Network** |  | 2027-03-31 | 2027-04-28 |  |  |
|  | MLVC | **Main Low Voltage Cables Works ( Cable 300 MM )** |  | 2027-03-31 | 2027-04-20 |  |  |
| CON-LV-ML-130 |  | Trench Excavation and Bedding Works for Main Cable of Low Voltage Network for Alignment-RD-01 | 6d | 2027-03-31 | 2027-04-06 | MS-CF-SW, CO-SD-CB-200, CO-PW-ML-160, ENG-SH-LV-A-120, ENG-MS-MV-A-120, MS-CS-LV SS, CO-MV-ML-300, CO-SW-ML-160, CO-EW-210_R, MS-MM-130, MS-MM-140 |  |
| CON-LV-ML-140 |  | Cable Laying Works for Main Cable of Low Voltage Network for Alignment-RD-01 | 6d | 2027-04-07 | 2027-04-13 | CON-LV-ML-130, PRO-LV-ML-1DL-100, PRO-LV-ML-DL-100 |  |
| CON-LV-ML-150 |  | Trench Backfilling and Compaction Works for Main Cable of Low Voltage Network for Alignment-RD-01 | 6d | 2027-04-14 | 2027-04-20 | CON-LV-ML-140 |  |
|  | SLVC | **Service Low Voltage Cables Works ( Cable 70 MM )** |  | 2027-04-07 | 2027-04-28 |  |  |
| CON-LV-HC-130 |  | Trench Excavation and Bedding Works for Service Cable of Low Voltage Network for Alignment-RD-01 | 6d | 2027-04-07 | 2027-04-13 | CON-LV-ML-130, ENG-MS-MV-A-120, MS-CS-LV SS, CO-EW-210_R, ENG-SH-LV-A-120, MS-MM-130, MS-MM-140, CO-PW-ML-160, CO-PW-VC-250, CO-PW-FH-190, CO-TSE-ML-230, CO-SW-ML-160, CO-SD-CB-200, CO-SD-ML-160, CO-SD-MH-260 |  |
| CON-LV-HC-140 |  | Cable Laying Works for Service Cable of Low Voltage Network for Alignment-RD-01 | 7d | 2027-04-14 | 2027-04-21 | CON-LV-HC-130, CON-LV-ML-140, PRO-LV-HC-1DL-100, PRO-LV-HC-DL-100 |  |
| CON-LV-HC-150 |  | Trench Backfilling and Compaction Works for Service Cable of Low Voltage Network for Alignment-RD-01 | 6d | 2027-04-22 | 2027-04-28 | CON-LV-HC-140, CON-LV-ML-150 |  |
|  | DP | **Distribution Pillars Works** |  | 2027-04-07 | 2027-04-14 |  |  |
| CON-LV-DP-130 |  | Foundation Excavation Works for Distribution Pillars of Low Voltage Network for Alignment-RD-01 | 7d | 2027-04-07 | 2027-04-14 | CON-LV-ML-130, ENG-MS-MV-A-120, MS-CS-LV SS, CO-EW-210_R, MS-MM-130, MS-MM-140 |  |
|  | SL | **Street Lighting Network** |  | 2027-03-17 | 2027-04-12 |  |  |
|  | LP | **Lighting Poles Works** |  | 2027-03-17 | 2027-04-07 |  |  |
| CO-SL-LP-350 |  | Installation Works for Lighting Poles Foundation of Street Lighting Network for Alignment-RD-01 | 8d | 2027-03-17 | 2027-03-25 | PRO-R25-SL-DL-110, ENG-SH-SL-A-110, ENG-MS-SL-A-110, ENG-MT-SL-A-100, MS-CS-SL SS, CO-EW-210_R, MS-MM-130, MS-MM-140, CO-MV-ML-280 |  |
| CO-SL-LP-360 |  | Installation Works for Lighting Poles of Street Lighting Network for Alignment-RD-01 | 5d | 2027-03-27 | 2027-03-31 | CO-SL-LP-350, ENG-MT-SL-A-110, PRO-R25-SL-DL-120 |  |
| CO-SL-LP-380 |  | Backfilling Works for Lighting Poles of Street Lighting Network for Alignment-RD-01 | 6d | 2027-04-01 | 2027-04-07 | CO-SL-LP-360 |  |
|  | CW | **Cabling Works** |  | 2027-04-01 | 2027-04-12 |  |  |
| CO-SL-CL-290 |  | Cable Laying Works for Street Lighting Network for Alignment-RD-01 | 5d | 2027-04-01 | 2027-04-06 | PRO-R25-SL-DL-100, ENG-SH-SL-A-110, ENG-MS-SL-A-110, ENG-MT-SL-ML-A-100, PRO-SL-1DL-100, MS-CS-SL SS, MS-MM-130, MS-MM-140, CO-SL-LP-360, CO-MV-ML-300, CO-IR-ML-180, CO-PW-ML-160, CO-PW-FH-190, CO-SW-ML-160, CO-SW-MH-250, CO-SD-CB-200, CO-SD-ML-160, CO-SD-MH-260, CO-EW-210_R |  |
| CO-SL-CL-300 |  | Trench Backfilling and Compaction Works for Street Lighting Network for Alignment-RD-01 | 5d | 2027-04-07 | 2027-04-12 | CO-SL-CL-290, CO-SL-LP-380 FF |  |
|  | DPB | **Distrubution Panel Boards** |  |  |  |  |  |
|  | TE | **Telecom and Light Current Network** |  | 2027-04-13 | 2027-05-06 |  |  |
|  | PD | **Ducts Works** |  | 2027-04-29 | 2027-05-06 |  |  |
| CO-TE-DW-150 |  | Pipes Laying Works for Ducts of Telecom Network for Alignment-RD-01 | 4d | 2027-04-29 | 2027-05-03 | PRO-R25-TE-DL-100, ENG-SH-TE-A-110, ENG-MS-TE-A-110, ENG-MT-TE-A-100, PRO-TE-1DL-100, MS-CS-TE SS, MS-MM-130, MS-MM-140, CO-SD-MH-260, CO-SD-ML-160, CO-SD-CB-200, CO-SW-ML-160, CO-PW-ML-160, CO-PW-VC-250, CO-PW-FH-190, CO-IR-ML-180, CO-MV-ML-300, CON-LV-ML-150, CON-LV-HC-150, CO-SL-LP-380, CO-SL-CL-300, CO-EW-210_R, PRO-LV-DP-1DL-100, PRO-LV-DP-DL-100, CON-LV-DP-130, PRO-R25-SL-DL-160 SS, ENG-MT-SL-DB-A-100, MS-CS-SL SS |  |
| CO-TE-DW-160 |  | Trench Backfilling and Compaction Works for Ducts of Telecom Network for Alignment-RD-01 | 3d | 2027-05-04 | 2027-05-06 | CO-TE-MH-190 SS, CO-TE-DW-150 |  |
|  | MH | **Manholes Works** |  | 2027-04-13 | 2027-04-21 |  |  |
| CO-TE-MH-170 |  | Excavation Works for Manholes of Telecom Network for Alignment-RD-01 | 4d | 2027-04-13 | 2027-04-17 | ENG-SH-TE-A-110, ENG-MS-TE-A-110, ENG-MT-TE-A-110, PRO-TE-1DL-110, MS-CS-TE SS, MS-MM-130, MS-MM-140, ENG-MT-TE-A-100, PRO-TE-1DL-100, CO-SD-MH-260, CO-SD-ML-160, CO-SD-CB-200, CO-SW-ML-160, CO-PW-ML-160, CO-PW-VC-250, CO-PW-FH-190, CO-IR-ML-180, CO-MV-ML-300, CO-SL-LP-380, CO-SL-CL-300, CO-EW-210_R, PRO-LV-DP-1DL-100, PRO-LV-DP-DL-100, PRO-R25-SL-DL-160 SS, ENG-MT-SL-DB-A-100, MS-CS-SL SS |  |
| CO-TE-MH-180 |  | Installation Works for Manholes of Telecom Network for Alignment-RD-01 | 4d | 2027-04-13 | 2027-04-17 | CO-TE-MH-170 SS, PRO-R25-TE-DL-110 |  |
| CO-TE-MH-190 |  | Backfilling Works for Manholes of Telecom Network for Alignment-RD-01 | 4d | 2027-04-18 | 2027-04-21 | CO-TE-MH-180 |  |
|  | DD | **CCTV, Telephone, MSN, ACs System Works** |  | 2027-04-22 | 2027-05-01 |  |  |
| CO-TE-CTV-150 |  | Installation of CCTV, Telephone, ACS and MSN Systems Cables for Alignment-RD-01 | 8d | 2027-04-22 | 2027-05-01 | PRO-R25-CTV-DL-100, CO-TE-MH-190, ENG-SH-MSN-A-120, ENG-SH-CTV-A-110, ENG-MS-CTV-A-110, ENG-MT-CTV-A-100, PRO-CTV-1DL-100, MS-CS-TE SS, MS-MM-130, MS-MM-140 |  |
|  | RD | **Road Network** |  | 2027-05-08 | 2027-05-24 |  |  |
|  | 1 | **Roads Works** |  |  |  |  |  |
|  | LS | **Pavement Works** |  | 2027-05-08 | 2027-05-24 |  |  |
| CO-RD-PV-180 |  | Fixing of Curbstone for Sidewalks Pavement for Alignment-RD-01 | 10d | 2027-05-08 | 2027-05-24 | ENG-MS-HS-A-10, PRO-R25-RD-DL-130, PRO-RD-1DL-150, PRO-R25-RD-DL-170, PRO-RD-1DL-130, PRO-R25-RD-DL-100, PRO-RD-1DL-100, MS-MM-140, MS-MM-130, MS-CS-RD SS, ENG-SH-RD-A-100, ENG-SH-RD-A-110, ENG-MS-RD-A-30, ENG-MS-RD-A-20, ENG-MS-RD-A-10, ENG-MS-RD-A-40, CO-TE-MH-190, CO-TE-DW-160, CO-SL-CL-300, CO-SL-LP-380, CON-LV-HC-150, CON-LV-ML-150, CO-MV-ML-300, CO-IR-ML-180, CO-PW-FH-190, CO-PW-VC-250, CO-PW-ML-160, CO-TSE-ML-230, CO-SW-ML-160, CO-SW-MH-250, CO-SD-CB-200, CO-SD-ML-160, CO-SD-MH-260, CO-EW-210_R, CO-SL-LP-520 |  |
| CO-RD-PV-190 |  | Fixing of Interlock Tiles for Sidewalks Pavement for Alignment-RD-01 | 10d | 2027-05-08 | 2027-05-24 | CO-RD-PV-180 SS, ENG-MS-HS-A-10, PRO-R25-RD-DL-120, PRO-RD-1DL-140 |  |
|  | TS | **Traffic Signs Boards and Roads Marking** |  | 2027-05-08 | 2027-05-22 |  |  |
| CO-RD-F-RM-190 |  | Application of Road Marking Works For Road Works for Alignment-RD-01 | 4d | 2027-05-08 | 2027-05-11 | CO-RD-PV-190 SS, ENG-MS-MRK-A-10, PRO-R25-RD-DL-150, ENG-SH-MRK-A-110, PRO-RD-1DL-170, CO-RD-PV-180 SS, PRO-R25-RD-DL-170, PRO-RD-1DL-130, PRO-R25-RD-DL-100, PRO-RD-1DL-100, MS-MM-140, MS-MM-130, MS-CS-RD SS, ENG-SH-RD-A-100, ENG-SH-RD-A-110, ENG-MS-RD-A-30, ENG-MS-RD-A-20, ENG-MS-RD-A-10, ENG-MS-RD-A-40, CO-TE-MH-190, CO-TE-DW-160, CO-SL-CL-300, CO-SL-LP-380, CON-LV-HC-150, CON-LV-ML-150, CO-MV-ML-300, CO-IR-ML-180, CO-PW-FH-190, CO-PW-VC-250, CO-PW-ML-160, CO-TSE-ML-230, CO-SW-ML-160, CO-SW-MH-250, CO-SD-CB-200, CO-SD-ML-160, CO-SD-MH-260, CO-EW-210_R, CO-SL-LP-520 |  |
| CO-RD-F-TS-130 |  | Installation Works of Traffic Signs Boards For Road Works for Alignment-RD-01 | 4d | 2027-05-12 | 2027-05-22 | CO-RD-F-RM-190, ENG-MS-TSB-A-10, PRO-R25-RD-DL-140, ENG-SH-TSB-A-100, PRO-RD-1DL-160, PRO-R25-RD-DL-170, PRO-RD-1DL-130, PRO-R25-RD-DL-100, PRO-RD-1DL-100, MS-MM-140, MS-MM-130, MS-CS-RD SS, ENG-SH-RD-A-100, ENG-SH-RD-A-110, ENG-MS-RD-A-30, ENG-MS-RD-A-20, ENG-MS-RD-A-10, ENG-MS-RD-A-40, CO-TE-MH-190, CO-TE-DW-160, CO-SL-CL-300, CO-SL-LP-380, CON-LV-HC-150, CON-LV-ML-150, CO-MV-ML-300, CO-IR-ML-180, CO-PW-FH-190, CO-PW-VC-250, CO-PW-ML-160, CO-TSE-ML-230, CO-SW-ML-160, CO-SW-MH-250, CO-SD-CB-200, CO-SD-ML-160, CO-SD-MH-260, CO-EW-210_R, CO-SL-LP-520 |  |

| ID | WBS | Task | Duration | Start | Finish | Predecessors |
| --- | --- | --- | --- | --- | --- | --- |
|  | 3 | **Finishes for Infrastructure Networks** |  | 2027-03-31 | 2027-06-08 |  |
|  | 11 | **Storm Drainage Network** |  | 2027-05-08 | 2027-06-08 |  |
|  | TF | **Testing and Finishes** |  | 2027-05-08 | 2027-06-08 |  |
| CO-SD-CB-TF-190 |  | Catch Basin Internal Finishes (Benching ) for Storm Drainage Network for Alignment-RD-01 | 6d | 2027-05-08 | 2027-05-13 | CO-SD-CB-200, CO-SD-MH-260, PRO-SD-1DL-140, PRO-R25-SD-DL-140, PRO-R25-RD-DL-170, PRO-RD-1DL-130, PRO-R25-RD-DL-100, PRO-RD-1DL-100, MS-MM-140, MS-MM-130, MS-CS-RD SS, ENG-SH-RD-A-100, ENG-SH-RD-A-110, ENG-MS-RD-A-30, ENG-MS-RD-A-20, ENG-MS-RD-A-10, ENG-MS-RD-A-40, CO-TE-MH-190, CO-TE-DW-160, CO-SL-CL-300, CO-SL-LP-380, CON-LV-HC-150, CON-LV-ML-150, CO-MV-ML-300, CO-IR-ML-180, CO-PW-FH-190, CO-PW-VC-250, CO-PW-ML-160, CO-TSE-ML-230, CO-SW-ML-160, CO-SW-MH-250, CO-SD-ML-160, CO-EW-210_R, CO-SL-LP-520 |
| CO-SD-ML-TF-110 |  | Testing Work for Pipes of Storm Drainage Network for Alignment-RD-01 | 2d | 2027-05-20 | 2027-05-22 | CO-SD-ML-160, CO-SD-PO-110-P1, CO-SD-PO-110-P2, CO-SD-CB-TF-190, CO-SD-MH-260, PRO-SD-1DL-140, PRO-R25-SD-DL-140, PRO-R25-RD-DL-170, PRO-RD-1DL-130, PRO-R25-RD-DL-100, PRO-RD-1DL-100, MS-MM-140, MS-MM-130, MS-CS-RD SS, ENG-SH-RD-A-100, ENG-SH-RD-A-110, ENG-MS-RD-A-30, ENG-MS-RD-A-20, ENG-MS-RD-A-10, ENG-MS-RD-A-40, CO-TE-MH-190, CO-TE-DW-160, CO-SL-CL-300, CO-SL-LP-380, CON-LV-HC-150, CON-LV-ML-150, CO-MV-ML-300, CO-IR-ML-180, CO-PW-FH-190, CO-PW-VC-250, CO-PW-ML-160, CO-TSE-ML-230, CO-SW-ML-160, CO-SW-MH-250, CO-SD-CB-200, CO-EW-210_R, CO-SL-LP-520 |
| CO-SD-MH-TF-230 |  | Testing Works for Manholes of Storm Drainage Network for Alignment-RD-01 | 2d | 2027-05-23 | 2027-05-24 | CO-SD-MH-260, CO-SD-ML-TF-110, PRO-SD-1DL-140, PRO-R25-SD-DL-140, PRO-R25-RD-DL-170, PRO-RD-1DL-130, PRO-R25-RD-DL-100, PRO-RD-1DL-100, MS-MM-140, MS-MM-130, MS-CS-RD SS, ENG-SH-RD-A-100, ENG-SH-RD-A-110, ENG-MS-RD-A-30, ENG-MS-RD-A-20, ENG-MS-RD-A-10, ENG-MS-RD-A-40, CO-TE-MH-190, CO-TE-DW-160, CO-SL-CL-300, CO-SL-LP-380, CON-LV-HC-150, CON-LV-ML-150, CO-MV-ML-300, CO-IR-ML-180, CO-PW-FH-190, CO-PW-VC-250, CO-PW-ML-160, CO-TSE-ML-230, CO-SW-ML-160, CO-SW-MH-250, CO-SD-CB-200, CO-SD-ML-160, CO-EW-210_R, CO-SL-LP-520 |
| CO-SD-CB-TF-170 |  | Testing Works for Catch Basins of Storm Drainage Network for Alignment-RD-01 | 7d | 2027-05-25 | 2027-06-01 | CO-SD-CB-200, CO-SD-CB-TF-190, CO-SD-MH-TF-230 |
| CO-SD-CB-TF-180 |  | Install Catch Basin Cover Works for External Finishes of Storm Drainage Network for Alignment-RD-01 | 6d | 2027-06-02 | 2027-06-08 | CO-SD-CB-TF-190, PRO-SD-1DL-150, PRO-R25-SD-DL-150, CO-SD-CB-200, CO-SD-CB-TF-170, PRO-R25-RD-DL-170, PRO-RD-1DL-130, PRO-R25-RD-DL-100, PRO-RD-1DL-100, MS-MM-140, MS-MM-130, MS-CS-RD SS, ENG-SH-RD-A-100, ENG-SH-RD-A-110, ENG-MS-RD-A-30, ENG-MS-RD-A-20, ENG-MS-RD-A-10, ENG-MS-RD-A-40, CO-TE-MH-190, CO-TE-DW-160, CO-SL-CL-300, CO-SL-LP-380, CON-LV-HC-150, CON-LV-ML-150, CO-MV-ML-300, CO-IR-ML-180, CO-PW-FH-190, CO-PW-VC-250, CO-PW-ML-160, CO-TSE-ML-230, CO-SW-ML-160, CO-SW-MH-250, CO-SD-ML-160, CO-SD-MH-260, CO-EW-210_R, CO-SL-LP-520 |
|  | 10 | **Sewage Network** |  | 2027-05-08 | 2027-05-20 |  |
|  | TF | **Testing and Finishes** |  | 2027-05-08 | 2027-05-20 |  |
| CO-SW-TF-250 |  | Testing Works for Main Line Manholes of Sewage Network for Alignment-RD-01 | 3d | 2027-05-08 | 2027-05-10 | CO-SW-MH-250, CO-SW-ML-160, CO-TSE-ML-230, CO-SD-MH-260, PRO-SD-1DL-140, PRO-R25-SD-DL-140, PRO-R25-RD-DL-170, PRO-RD-1DL-130, PRO-R25-RD-DL-100, PRO-RD-1DL-100, MS-MM-140, MS-MM-130, MS-CS-RD SS, ENG-SH-RD-A-100, ENG-SH-RD-A-110, ENG-MS-RD-A-30, ENG-MS-RD-A-20, ENG-MS-RD-A-10, ENG-MS-RD-A-40, CO-TE-MH-190, CO-TE-DW-160, CO-SL-CL-300, CO-SL-LP-380, CON-LV-HC-150, CON-LV-ML-150, CO-MV-ML-300, CO-IR-ML-180, CO-PW-FH-190, CO-PW-VC-250, CO-PW-ML-160, CO-SD-CB-200, CO-SD-ML-160, CO-EW-210_R, CO-SL-LP-520 |
| CO-SW-TF-230 |  | Final Testing For Main Line of Sewage Network for Alignment-RD-01 | 4d | 2027-05-11 | 2027-05-20 | CO-SW-ML-160, CO-SW-MH-250, CO-TSE-ML-230, CO-SW-TF-250 |
|  | 9 | **Potable Water Network** |  | 2027-05-08 | 2027-05-22 |  |
|  | TF | **Testing and Finishes** |  | 2027-05-08 | 2027-05-22 |  |
| CO-PW-TF-140 |  | Fire Hydrant Finishies (S.Box + Safety + Marker Post ) of Potable Water Network for Alignment-RD-01 | 4d | 2027-05-08 | 2027-05-11 | CO-PW-FH-190, ENG-MT-PW-TF-A-100, PRO-R25-RD-DL-170, PRO-RD-1DL-130, PRO-R25-RD-DL-100, PRO-RD-1DL-100, MS-MM-140, MS-MM-130, MS-CS-RD SS, ENG-SH-RD-A-100, ENG-SH-RD-A-110, ENG-MS-RD-A-30, ENG-MS-RD-A-20, ENG-MS-RD-A-10, ENG-MS-RD-A-40, CO-TE-MH-190, CO-TE-DW-160, CO-SL-CL-300, CO-SL-LP-380, CON-LV-HC-150, CON-LV-ML-150, CO-MV-ML-300, CO-IR-ML-180, CO-PW-VC-250, CO-PW-ML-160, CO-TSE-ML-230, CO-SW-ML-160, CO-SW-MH-250, CO-SD-CB-200, CO-SD-ML-160, CO-SD-MH-260, CO-EW-210_R, CO-SL-LP-520 |
| CO-PW-TF-150 |  | Final Finishes works and Covers for Valves and Valve Chambers for Alignment-RD-01 | 2d | 2027-05-12 | 2027-05-13 | CO-PW-VC-250, ENG-MT-PW-TF-A-100, PRO-PW-1DL-130, PRO-R25-PW-DL-130, CO-PW-TF-140 |
| CO-PW-TF-220 |  | Testing of Potable Water Network for Alignment-RD-01 | 2d | 2027-05-20 | 2027-05-22 | CO-PW-ML-160, CO-PW-TF-150 |
|  | 13 | **Irrigation Network** |  | 2027-05-23 | 2027-05-24 |  |
|  | TF | **Testing and Finishes** |  | 2027-05-23 | 2027-05-24 |  |
| CO-IR-TF-170 |  | Final Testing (pressure tests) of Irrigation Network for Alignment-RD-01 | 2d | 2027-05-23 | 2027-05-24 | CO-IR-ML-190, CO-PW-TF-220 |
|  | 1 | **Treated Sewage Effluent (Tse)** |  | 2027-05-23 | 2027-05-24 |  |
|  | TF | **Testing and Finishes** |  | 2027-05-23 | 2027-05-24 |  |
| CO-TSE-TF-210 |  | Final Testing (pressure tests) of Treated Sewage Effluent (Tse) for Alignment-RD-01 | 2d | 2027-05-23 | 2027-05-24 | CO-TSE-ML-230, CO-PW-TF-220 |
|  | 14 | **Medium Voltage Network** |  | 2027-03-31 | 2027-04-01 |  |
|  | TT | **Termination and Testing Works** |  | 2027-03-31 | 2027-04-01 |  |
| CO-MV-TF-230 |  | Testing and Termination Works of Medium Voltage Network for Alignment-RD-01 | 2d | 2027-03-31 | 2027-04-01 | CO-MV-ML-300 |
|  | 6 | **Low Voltage Network** |  | 2027-04-29 | 2027-05-03 |  |
|  | TT | **Termination and Testing Works** |  | 2027-04-29 | 2027-05-03 |  |
| CON-LV-TT-120 |  | Testing and Termination Works for Substation Low Voltage Panel Boards of Low Voltage Network for Alignment-RD-01 | 4d | 2027-04-29 | 2027-05-03 | PRO-LV-TT-1DL-100, PRO-LV-TT-DL-100, CON-LV-HC-150, CON-LV-ML-150, CO-MV-TF-230, PRO-LV-DP-1DL-100, PRO-LV-DP-DL-100, CON-LV-DP-130 |
|  | 1 | **Earthing System Works** |  |  |  |  |
|  | 12 | **Street Lighting Network** |  | 2027-04-13 | 2027-05-09 |  |
|  | TR | **Termination and Testing Works** |  | 2027-04-13 | 2027-05-09 |  |
| CO-SL-LP-370 |  | Installation Works for Lighting Fixtures With Drop Wire of Street Lighting Network for Alignment-RD-01 | 6d | 2027-04-13 | 2027-04-19 | CO-SL-LP-380, ENG-MT-SL-A-120, PRO-R25-SL-DL-140, CO-SL-LP-570, PRO-R25-SL-DL-160 SS, CO-SL-CL-300, ENG-MT-SL-DB-A-100, MS-CS-SL SS, CO-EW-210_R, MS-MM-130, MS-MM-140 |
| CO-SL-TF-410 |  | Testing Works for Lighting Poles of Street Lighting Network for Alignment-RD-01 | 3d | 2027-05-06 | 2027-05-09 | CO-SL-LP-370, CO-SL-ES-250, PRO-R25-SL-DL-130, PRO-R25-SL-DL-160 SS, CO-SL-LP-380, CO-SL-CL-300, ENG-MT-SL-DB-A-100, MS-CS-SL SS, CO-EW-210_R, MS-MM-130, MS-MM-140 |
|  | ES | **Earthing System Works** |  | 2027-05-01 | 2027-05-05 |  |
| CO-SL-ES-240 |  | Install Earthing System Works for Lighting Poles of Street Lighting Network for Alignment-RD-01 | 3d | 2027-05-01 | 2027-05-03 | CO-SL-LP-370, ENG-MT-SL-ES-A-100, PRO-R25-SL-DL-150 |
| CO-SL-ES-250 |  | Install Earthing System Works for Lighting Panel Boards of Street Lighting Network for Alignment-RD-01 | 2d | 2027-05-04 | 2027-05-05 | CO-SL-ES-240, PRO-R25-SL-DL-150 |
|  | 3 | **Telecom and Light Current Network** |  | 2027-05-08 | 2027-05-13 |  |
|  | 1 | **Testing and Finishes** |  | 2027-05-08 | 2027-05-13 |  |
| CO-TE-CTV-TF-180 |  | Testing and Interface modules with Telecom for Alignment-RD-01 | 3d | 2027-05-08 | 2027-05-10 | CO-TE-MH-190, CO-TE-DW-160, CO-TE-CTV-150 SS |
| CO-TE-CTV-TF-310 |  | Testing and Interface modules with CCTV, Telephone, MSN and Access Control for Alignment-RD-01 | 3d | 2027-05-11 | 2027-05-13 | CO-TE-CTV-TF-180, CO-TE-CTV-150 SS |
|  | 5 | **Alignment-RD-02** |  | 2026-11-29 | 2027-06-28 |  |
|  | EW | **Earthworks** |  | 2026-11-29 | 2026-12-12 |  |
|  | EW | **Earthworks** |  | 2026-11-29 | 2026-12-12 |  |
| CO-EW-220 |  | Excavation and Backfilling Works Upto Design Level for Earthworks for Alignment-RD-02 | 12d | 2026-11-29 | 2026-12-12 | MS-CS-PS SS, MOB-30, MOB-20, MOB-80, MOB-40, MOB-50, MOB-60, MOB-10, MOB-70, PRE-CON-MDC-10, PRE-CON-MDC-20, PRE-CON-MDC-30, PRE-CON-MDC-40, PRE-CON-MDC-50, PRE-CON-MDC-60, PRE-CON-MDC-70, PRE-CON-MDC-80, MS-MM-100, MS-MM-130, MS-MM-140, MS-MM-150, CO-EW-230 |
|  | SD | **Storm Drainage Network** |  | 2026-12-13 | 2027-04-03 |  |
|  | MH | **Manholes** |  | 2026-12-13 | 2026-12-27 |  |
| CO-SD-MH-270 |  | Trench Excavation and Bedding Works for Manholes of Storm Drainage Network for Alignment-RD-02 | 4d | 2026-12-13 | 2026-12-16 | CO-EW-230, CO-SD-MH-180, ENG-MT-SD-ML-A-100, MS-CS-SD SS, CO-EW-220, ENG-MS-SD-ML-A-110, ENG-MT-SD-ML-A-110, ENG-SH-SD-ML-A-110, MS-MM-130, MS-MM-140 |
| CO-SD-MH-280 |  | Install RC Footing Works for Manholes of Storm Drainage Network for Alignment-RD-02 | 3d | 2026-12-17 | 2026-12-20 | PRO-R25-SD-DL-100, CO-SD-MH-190, ENG-MT-SD-ML-A-100, MS-CS-SD SS, CO-EW-230, ENG-MS-SD-ML-A-110, ENG-MT-SD-ML-A-110, ENG-SH-SD-ML-A-110, MS-MM-130, MS-MM-140, CO-SD-MH-180, CO-SD-MH-270, PRO-R25-SD-DL-100 FF, PRO-SD-1DL-100 |
| CO-SD-MH-290 |  | Install RC Wall Rings & Slab Works for Manholes of Storm Drainage Network for Alignment-RD-02 | 3d | 2026-12-21 | 2026-12-23 | CO-SD-MH-200, PRO-R25-SD-DL-100, CO-SD-MH-190, ENG-MT-SD-ML-A-100, MS-CS-SD SS, CO-EW-230, ENG-MS-SD-ML-A-110, ENG-MT-SD-ML-A-110, ENG-SH-SD-ML-A-110, MS-MM-130, MS-MM-140, CO-SD-MH-180, CO-SD-MH-280, PRO-SD-1DL-100 |
| CO-SD-MH-300 |  | Backfilling Works for Manholes of Storm Drainage Network for Alignment-RD-02 | 3d | 2026-12-24 | 2026-12-27 | CO-SD-MH-220, PRO-SD-1DL-100, CO-SD-MH-200, PRO-R25-SD-DL-100, CO-SD-MH-190, ENG-MT-SD-ML-A-100, MS-CS-SD SS, CO-EW-230, ENG-MS-SD-ML-A-110, ENG-MT-SD-ML-A-110, ENG-SH-SD-ML-A-110, MS-MM-130, MS-MM-140, CO-SD-MH-180, CO-SD-MH-290 |
|  | ML | **Main Line Sections** |  | 2026-12-24 | 2027-01-03 |  |
| CO-SD-ML-170 |  | Trench Excavation and Bedding Works for Main Lines of Storm Drainage Network for Alignment-RD-02 | 3d | 2026-12-24 | 2026-12-27 | CO-EW-220, ENG-SH-SD-ML-A-110, ENG-MS-SD-ML-A-110, ENG-MT-SD-ML-A-110, MS-CS-SD SS, MS-MM-130, MS-MM-140, CO-SD-MH-290, CO-SD-MH-270 SS, CO-SD-MH-270 FF, CO-SD-ML-200 |
| CO-SD-ML-180 |  | Pipes Laying Works for Main Lines of Storm Drainage Network for Alignment-RD-02 | 3d | 2026-12-28 | 2026-12-30 | CO-SD-ML-170, PRO-R25-SD-DL-120 FF, PRO-SD-1DL-110, CO-SD-MH-290, CO-SD-ML-210 |
| CO-SD-ML-190 |  | Trench Backfilling and Compaction Works for Main Lines of Storm Drainage Network for Alignment-RD-02 | 3d | 2026-12-31 | 2027-01-03 | CO-SD-ML-180, CO-SD-ML-220, CO-SD-MH-300 FF |
|  | CB | **Catch Basin Sections** |  | 2027-01-04 | 2027-04-03 |  |
| CO-SD-CB-210 |  | Trench Excavation and Bedding Works for Catch Basins of Storm Drainage Network for Alignment-RD-02 | 18d | 2027-01-04 | 2027-01-24 | CO-SD-ML-220, CO-SD-ML-130, ENG-MT-SD-CB-A-110, ENG-SH-SD-CB-A-110, ENG-MS-SD-CB-A-110, MS-CS-SD SS, CO-SD-ML-190, MS-MM-130, MS-MM-140 |
| CO-SD-CB-220 |  | Installation and Pipes Laying Connection Works for Catch Basins of Storm Drainage Network for Alignment-RD-02 | 19d | 2027-01-25 | 2027-02-15 | PRO-R25-SD-DL-110, PRO-R25-SD-DL-130, ENG-MT-SD-CB-A-110, ENG-SH-SD-CB-A-110, ENG-MS-SD-CB-A-110, MS-CS-SD SS, CO-SD-ML-130, MS-MM-130, MS-MM-140, CO-SD-ML-220, CO-SD-CB-210, PRO-R25-SD-DL-110 FF, PRO-R25-SD-DL-130 FF, PRO-SD-1DL-130, PRO-SD-1DL-120 |
| CO-SD-CB-230 |  | Trench Backfilling and Compaction Works for Catch Basins of Storm Drainage Network for Alignment-RD-02 | 5d | 2027-03-29 | 2027-04-03 | CO-SD-ML-130, PRO-R25-SD-DL-110, PRO-R25-SD-DL-130, PRO-SD-1DL-130, PRO-SD-1DL-120, ENG-MT-SD-CB-A-110, ENG-SH-SD-CB-A-110, ENG-MS-SD-CB-A-110, MS-CS-SD SS, MS-MM-130, MS-MM-140, CO-SD-ML-220, CO-SD-CB-220, CO-SD-PO-110-P1 FF |
|  | SW | **Sewage Network** |  | 2027-01-04 | 2027-03-15 |  |
|  | 1 | **Manholes** |  | 2027-01-04 | 2027-03-15 |  |
| CO-SW-MH-260 |  | Excavation Works for Main Line Manholes of Sewage Network for Alignment-RD-02 | 11d | 2027-01-04 | 2027-01-16 | CO-EW-230, CO-SD-MH-220, PRO-SD-1DL-100, CO-SD-MH-200, PRO-R25-SD-DL-100, CO-SD-MH-190, ENG-MT-SD-ML-A-100, MS-CS-SD SS, ENG-MS-SD-ML-A-110, ENG-MT-SD-ML-A-110, ENG-SH-SD-ML-A-110, CO-SD-MH-180, ENG-MT-SW-ML-A-100, ENG-SH-SW-ML-A-110, MS-CS-SW SS, CO-EW-220, MS-MM-130, MS-MM-140, ENG-MS-SW-ML-A-110, CO-SD-MH-300, CO-SD-ML-190 |
| CO-SW-MH-270 |  | Installation RC Footing Works for Main Line Manholes of Sewage Network for Alignment-RD-02 | 11d | 2027-01-17 | 2027-01-28 | PRO-SW-1DL-110 SS, ENG-MT-SW-ML-A-100, ENG-SH-SW-ML-A-110, MS-CS-SW SS, CO-EW-230, MS-MM-130, MS-MM-140, ENG-MS-SW-ML-A-110, CO-SD-MH-220, PRO-SD-1DL-100, CO-SD-MH-200, PRO-R25-SD-DL-100, CO-SD-MH-190, ENG-MT-SD-ML-A-100, MS-CS-SD SS, ENG-MS-SD-ML-A-110, ENG-MT-SD-ML-A-110, ENG-SH-SD-ML-A-110, CO-SD-MH-180, CO-SW-MH-260, PRO-SW-1DL-110, PRO-R25-SW-DL-110 |
| CO-SW-MH-280 |  | Install Grp Liner Wall Works for Main Line Manholes of Sewage Network for Alignment-RD-02 | 12d | 2027-01-30 | 2027-02-11 | PRO-SW-1DL-110 SS, ENG-MT-SW-ML-A-100, ENG-SH-SW-ML-A-110, MS-CS-SW SS, CO-EW-230, MS-MM-130, MS-MM-140, ENG-MS-SW-ML-A-110, CO-SD-MH-220, PRO-SD-1DL-100, CO-SD-MH-200, PRO-R25-SD-DL-100, CO-SD-MH-190, ENG-MT-SD-ML-A-100, MS-CS-SD SS, ENG-MS-SD-ML-A-110, ENG-MT-SD-ML-A-110, ENG-SH-SD-ML-A-110, CO-SD-MH-180, CO-SW-MH-270 |
| CO-SW-MH-290 |  | Pouring Grp Liner Wall Works for Main Line Manholes of Sewage Network for Alignment-RD-02 | 12d | 2027-02-13 | 2027-02-25 | PRO-SW-1DL-110 SS, ENG-MT-SW-ML-A-100, ENG-SH-SW-ML-A-110, MS-CS-SW SS, CO-EW-230, MS-MM-130, MS-MM-140, ENG-MS-SW-ML-A-110, CO-SD-MH-220, PRO-SD-1DL-100, CO-SD-MH-200, PRO-R25-SD-DL-100, CO-SD-MH-190, ENG-MT-SD-ML-A-100, MS-CS-SD SS, ENG-MS-SD-ML-A-110, ENG-MT-SD-ML-A-110, ENG-SH-SD-ML-A-110, CO-SD-MH-180, CO-SW-MH-280 |
| CO-SW-MH-300 |  | Backfilling Works for Main Line Manholes of Sewage Network for Alignment-RD-02 | 12d | 2027-02-27 | 2027-03-15 | PRO-SW-1DL-110 SS, ENG-MT-SW-ML-A-100, ENG-SH-SW-ML-A-110, MS-CS-SW SS, CO-EW-230, MS-MM-130, MS-MM-140, ENG-MS-SW-ML-A-110, CO-SD-MH-220, PRO-SD-1DL-100, CO-SD-MH-200, PRO-R25-SD-DL-100, CO-SD-MH-190, ENG-MT-SD-ML-A-100, MS-CS-SD SS, ENG-MS-SD-ML-A-110, ENG-MT-SD-ML-A-110, ENG-SH-SD-ML-A-110, CO-SD-MH-180, CO-SW-MH-290 |
|  | ML | **Main Line Sections** |  | 2027-01-04 | 2027-03-15 |  |
| CO-SW-ML-170 |  | Trench Excavation and Bedding Works for Main Lines of Sewage Network for Alignment-RD-02 | 11d | 2027-01-04 | 2027-01-16 | CO-EW-230, CO-SD-ML-220, CO-SD-MH-220, PRO-SD-1DL-100, CO-SD-MH-200, PRO-R25-SD-DL-100, CO-SD-MH-190, ENG-MT-SD-ML-A-100, MS-CS-SD SS, ENG-MS-SD-ML-A-110, ENG-MT-SD-ML-A-110, ENG-SH-SD-ML-A-110, CO-SD-MH-180, ENG-MT-SW-ML-A-100, ENG-SH-SW-ML-A-110, ENG-MS-SW-ML-A-110, ENG-MT-SW-ML-A-110, MS-CS-SW SS, CO-EW-220, MS-MM-130, MS-MM-140, CO-SW-MH-260 SS, CO-SW-MH-260 FF, CO-SD-MH-300, CO-SD-ML-190 |
| CO-SW-ML-180 |  | Pipes Laying Works for Main Lines of Sewage Network for Alignment-RD-02 | 11d | 2027-01-17 | 2027-01-28 | ENG-SH-SW-ML-A-110, ENG-MS-SW-ML-A-110, ENG-MT-SW-ML-A-110, MS-CS-SW SS, CO-EW-230, MS-MM-130, MS-MM-140, CO-SD-ML-220, CO-SD-MH-220, PRO-SD-1DL-100, CO-SD-MH-200, PRO-R25-SD-DL-100, CO-SD-MH-190, ENG-MT-SD-ML-A-100, MS-CS-SD SS, ENG-MS-SD-ML-A-110, ENG-MT-SD-ML-A-110, ENG-SH-SD-ML-A-110, CO-SD-MH-180, ENG-MT-SW-ML-A-100, CO-SW-ML-170, PRO-SW-1DL-100, PRO-R25-SW-DL-100 |
| CO-SW-ML-190 |  | Trench Backfilling and Compaction Works for Main Lines of Sewage Network for Alignment-RD-02 | 11d | 2027-02-28 | 2027-03-15 | PRO-SW-1DL-110 SS, ENG-MT-SW-ML-A-100, ENG-SH-SW-ML-A-110, MS-CS-SW SS, CO-EW-230, MS-MM-130, MS-MM-140, ENG-MS-SW-ML-A-110, CO-SD-MH-220, PRO-SD-1DL-100, CO-SD-MH-200, PRO-R25-SD-DL-100, CO-SD-MH-190, ENG-MT-SD-ML-A-100, MS-CS-SD SS, ENG-MS-SD-ML-A-110, ENG-MT-SD-ML-A-110, ENG-SH-SD-ML-A-110, CO-SD-MH-180, PRO-SW-1DL-100, ENG-MT-SW-ML-A-110, CO-SD-ML-220, CO-SW-ML-180, CO-SW-MH-300 FF |

| ID | WBS | Task | Duration | Start | Finish | Predecessors |
| --- | --- | --- | --- | --- | --- | --- |
|  | TSE | **Treated Sewage Effluent (Tse)** |  | 2027-01-04 | 2027-02-20 |  |
| CO-TSE-ML-250 |  | Trench Excavation and Bedding Works for Main Lines of Treated Sewage Effluent (Tse) for Alignment-RD-02 | 12d | 2027-01-04 | 2027-01-17 | ENG-SH-TSE-ML-A-120, ENG-MS-TSE-ML-A-120, ENG-MT-IR-ML-A-120, MS-CS-TSE SS, CO-EW-220, MS-MM-130, MS-MM-140, CO-SW-MH-260 SS |
| CO-TSE-ML-260 |  | Pipes Laying Works for Main Lines of Treated Sewage Effluent (Tse) for Alignment-RD-02 | 17d | 2027-01-18 | 2027-02-06 | CO-TSE-ML-250, PRO-TSE-1DL-120, PRO-R25-TSE-DL-120 |
| CO-TSE-ML-280 |  | Trench Backfilling and Compaction Works for Treated Sewage Effluent (Tse) for Alignment-RD-02 | 12d | 2027-02-07 | 2027-02-20 | CO-TSE-ML-260 |
|  | PW | **Potable Water Network** |  | 2027-02-21 | 2027-03-16 |  |
|  | ML | **Main Line Sections** |  | 2027-02-21 | 2027-03-15 |  |
| CO-PW-ML-170 |  | Trench Excavation and Bedding Works for Main Lines of Potable Water Network for Alignment-RD-02 | 5d | 2027-02-21 | 2027-02-25 | CO-TSE-ML-280, ENG-SH-PW-ML-A-110, ENG-MS-PW-ML-A-110, ENG-MT-PW-ML-A-100, MS-CS-PW SS, CO-EW-220, MS-MM-130, MS-MM-140, CO-TSE-ML-250 SS |
| CO-PW-ML-180 |  | Pipes Laying and accessories for Main Lines of Potable Water Network for Alignment-RD-02 | 7d | 2027-02-27 | 2027-03-06 | CO-PW-ML-170, PRO-PW-1DL-100, PRO-R25-PW-DL-100 SS |
| CO-PW-ML-190 |  | Trench Backfilling and Compaction Works for Main Lines of Potable Water Network for Alignment-RD-02 | 5d | 2027-03-07 | 2027-03-15 | CO-PW-ML-180 |
|  | VC | **Valve Chamber** |  | 2027-02-21 | 2027-03-16 |  |
| CO-PW-VC-260 |  | Excavation Works for Main Line Valves and Valve Chambers of Potable Water Network for Alignment-RD-02 | 5d | 2027-02-21 | 2027-02-25 | CO-TSE-ML-310, ENG-MT-PW-ML-A-110, MS-CS-PW SS, CO-PW-ML-170 SS, CO-PW-ML-170 FF, MS-MM-130, MS-MM-140 |
| CO-PW-VC200 |  | Installation of Valve Chambers of Potable Water Network for Alignment-RD-02 | 3d | 2027-02-27 | 2027-03-01 | CO-PW-VC-260, PRO-R25-PW-DL-120 |
| CO-PW-VC-270 |  | Installation Works for Valves of Potable Water Network for Alignment-RD-02 | 5d | 2027-03-02 | 2027-03-07 | CO-PW-VC200, PRO-PW-1DL-110, PRO-R25-PW-DL-110 SS |
| CO-PW-VC-280 |  | Backfilling Works for Main Line Valves and Valve Chambers of Potable Water Network for Alignment-RD-02 | 5d | 2027-03-08 | 2027-03-16 | CO-PW-VC-270 |
|  | FH | **Fire Hydrant** |  | 2027-02-27 | 2027-03-16 |  |
| CO-PW-FH-200 |  | Excavation Works for Fire Hydrants of Potable Water Network for Alignment-RD-02 | 3d | 2027-02-27 | 2027-03-01 | CO-PW-VC-260, ENG-SH-PW-FH-A-110, ENG-MT-PW-FH-A-100, MS-CS-PW SS, CO-EW-220, MS-MM-130, MS-MM-140 |
| CO-PW-FH-210 |  | Installation Works for Fire Hydrant of Potable Water Network for Alignment-RD-02 | 3d | 2027-03-07 | 2027-03-13 | CO-PW-FH-200, PRO-PW-1DL-120, CO-PW-ML-180 |
| CO-PW-FH-220 |  | Trench Backfilling and Compaction Works for Fire Hydrants of Potable Water Network for Alignment-RD-02 | 3d | 2027-03-14 | 2027-03-16 | CO-PW-FH-210, CO-PW-VC-280 FF |
|  | IR | **Irrigation Network** |  | 2027-02-28 | 2027-03-23 |  |
|  | ML | **Main Line Pipes** |  | 2027-02-28 | 2027-03-23 |  |
| CO-IR-ML-200 |  | Trench Excavation and Bedding Works for Main Lines of Irrigation Network for Alignment-RD-02 | 3d | 2027-02-28 | 2027-03-02 | ENG-SH-IR-ML-A-110, ENG-MS-IR-ML-A-110, ENG-MT-IR-ML-A-100, CO-PW-ML-170, MS-CS-IR SS, CO-EW-220, MS-MM-130, MS-MM-140, CO-IR-ML-350 |
| CO-IR-ML-210 |  | Pipes Laying Works for Main Lines of Irrigation Network for Alignment-RD-02 | 3d | 2027-03-07 | 2027-03-13 | CO-IR-ML-200, PRO-IR-1DL-100, CO-PW-ML-180, PRO-R25-IR-DL-100, CO-IR-ML-360 |
| CO-IR-ML-220 |  | Installation Works for Main Line Valves of Irrigation Network for Alignment-RD-02 | 3d | 2027-03-14 | 2027-03-16 | CO-IR-ML-210, ENG-MT-IR-ML-A-110, PRO-IR-1DL-110, PRO-R25-IR-DL-110, CO-IR-ML-370 |
| CO-IR-ML-240 |  | Installation Works for Bulbblers And Sprinkler and Irrigation Control System of Irrigation Network for Alignment-RD-02 | 3d | 2027-03-17 | 2027-03-20 | CO-IR-ML-220, CO-IR-ML-390 |
| CO-IR-ML-230 |  | Trench Backfilling and Compaction Works for Main Lines of Irrigation Network for Alignment-RD-02 | 3d | 2027-03-21 | 2027-03-23 | CO-IR-ML-240, CO-IR-ML-380 |
|  | MV | **Medium Voltage Network** |  | 2027-04-04 | 2027-04-17 |  |
|  | CW | **Cabling Works** |  | 2027-04-04 | 2027-04-17 |  |
| CO-MV-ML-310 |  | Trench Excavation and Bedding Works for Medium Voltage Network for Alignment-RD-02 | 4d | 2027-04-04 | 2027-04-07 | ENG-SH-MV-A-110, ENG-MS-MV-A-110, MS-CS-MV SS, CO-PW-FH-220, CO-SW-ML-190, CO-SD-CB-230, CO-SD-ML-190, CO-SD-MH-300, CO-SW-MH-300, CO-PW-VC-280, CO-EW-220, MS-MM-130, MS-MM-140, CO-PW-ML-190 |
| CO-MV-ML-320 |  | Duct Laying Works for Medium Voltage Network for Alignment-RD-02 | 4d | 2027-04-08 | 2027-04-12 | CO-MV-ML-310, PRO-MV-DL-100, PRO-MV-1DL-100 |
| CO-MV-ML-330 |  | Trench Backfilling and Compaction Works for Medium Voltage Network for Alignment-RD-02 | 4d | 2027-04-13 | 2027-04-17 | CO-MV-ML-320 |
|  | LV | **Low Voltage Network** |  | 2027-03-24 | 2027-05-09 |  |
|  | MLVC | **Main Low Voltage Cables Works ( Cable 300 MM )** |  | 2027-03-24 | 2027-05-03 |  |
| CON-LV-ML-170 |  | Cable Laying Works for Main Cable of Low Voltage Network for Alignment-RD-02 | 12d | 2027-03-24 | 2027-04-06 | CO-IR-ML-230, PRO-LV-ML-1DL-100, PRO-LV-ML-DL-100 |
| CON-LV-ML-160 |  | Trench Excavation and Bedding Works for Main Cable of Low Voltage Network for Alignment-RD-02 | 5d | 2027-04-18 | 2027-04-22 | CO-SD-CB-230, CO-PW-ML-190, ENG-SH-LV-A-120, ENG-MS-MV-A-120, MS-CS-LV SS, CO-MV-ML-330, CO-SW-ML-190, CO-EW-220, MS-MM-130, MS-MM-140 |
| CON-LV-ML-180 |  | Trench Backfilling and Compaction Works for Main Cable of Low Voltage Network for Alignment-RD-02 | 9d | 2027-04-24 | 2027-05-03 | CON-LV-ML-160 |
|  | SLVC | **Service Low Voltage Cables Works ( Cable 70 MM )** |  | 2027-04-24 | 2027-05-09 |  |
| CON-LV-HC-160 |  | Trench Excavation and Bedding Works for Service Cable of Low Voltage Network for Alignment-RD-02 | 4d | 2027-04-24 | 2027-04-27 | CON-LV-ML-160, ENG-MS-MV-A-120, MS-CS-LV SS, CO-EW-220, ENG-SH-LV-A-120, MS-MM-130, MS-MM-140, CO-PW-ML-190, CO-PW-VC-280, CO-PW-FH-220, CO-TSE-ML-280, CO-SW-ML-190, CO-SW-MH-300, CO-SD-CB-230, CO-SD-ML-190, CO-SD-MH-300 |
| CON-LV-HC-170 |  | Cable Laying Works for Service Cable of Low Voltage Network for Alignment-RD-02 | 6d | 2027-04-28 | 2027-05-04 | CON-LV-HC-160, CON-LV-ML-170, PRO-LV-HC-1DL-100, PRO-LV-HC-DL-100 |
| CON-LV-HC-180 |  | Trench Backfilling and Compaction Works for Service Cable of Low Voltage Network for Alignment-RD-02 | 4d | 2027-05-05 | 2027-05-09 | CON-LV-HC-170, CON-LV-ML-180 |
|  | DP | **Distribution Pillars Works** |  | 2027-04-18 | 2027-05-03 |  |
| CON-LV-DP-160 |  | Foundation Excavation Works for Distribution Pillars of Low Voltage Network for Alignment-RD-02 | 6d | 2027-04-18 | 2027-04-24 | CON-LV-ML-160 SS, CON-LV-ML-160 FF, ENG-MS-MV-A-120, MS-CS-LV SS, CO-EW-220, MS-MM-130, MS-MM-140 |
| CON-LV-DP-170 |  | Pouring Plain Concrete For Distribution Pillar Units of Low Voltage Network for Alignment-RD-02 | 4d | 2027-04-25 | 2027-04-28 | CON-LV-DP-160 |
| CON-LV-DP-180 |  | Installation Works for Distribution Pillar Units of Low Voltage Network for Alignment-RD-02 | 4d | 2027-04-29 | 2027-05-03 | CON-LV-DP-170, PRO-LV-DP-1DL-100, PRO-LV-DP-DL-100 SS |
|  | SL | **Street Lighting Network** |  | 2027-04-25 | 2027-05-24 |  |
|  | LP | **Lighting Poles Works** |  | 2027-04-25 | 2027-05-06 |  |
| CO-SL-LP-400 |  | Installation Works for Lighting Poles Foundation of Street Lighting Network for Alignment-RD-02 | 4d | 2027-04-25 | 2027-04-28 | PRO-R25-SL-DL-110, ENG-SH-SL-A-110, ENG-MS-SL-A-110, ENG-MT-SL-A-100, MS-CS-SL SS, CO-EW-220, MS-MM-130, MS-MM-140, CON-LV-DP-160 |
| CO-SL-LP-410 |  | Installation Works for Lighting Poles of Street Lighting Network for Alignment-RD-02 | 4d | 2027-04-29 | 2027-05-03 | CO-SL-LP-400, ENG-MT-SL-A-110, PRO-R25-SL-DL-120 |
| CO-SL-LP-430 |  | Backfilling Works for Lighting Poles of Street Lighting Network for Alignment-RD-02 | 3d | 2027-05-04 | 2027-05-06 | CO-SL-LP-410 |
|  | CW | **Cabling Works** |  | 2027-04-25 | 2027-05-02 |  |
| CO-SL-CL-320 |  | Cable Laying Works for Street Lighting Network for Alignment-RD-02 | 4d | 2027-04-25 | 2027-04-28 | PRO-R25-SL-DL-100, ENG-SH-SL-A-110, ENG-MS-SL-A-110, ENG-MT-SL-ML-A-100, PRO-SL-1DL-100, MS-CS-SL SS, MS-MM-130, MS-MM-140, CO-MV-ML-330, CO-IR-ML-230, CO-PW-ML-190, CO-PW-FH-220, CO-SW-ML-190, CO-SW-MH-300, CO-SD-CB-230, CO-SD-ML-190, CO-SD-MH-300, CO-EW-220, ENG-MT-SL-A-100, CON-LV-DP-160 |
| CO-SL-CL-330 |  | Trench Backfilling and Compaction Works for Street Lighting Network for Alignment-RD-02 | 3d | 2027-04-29 | 2027-05-02 | CO-SL-CL-320 |
|  | DPB | **Distrubution Panel Boards** |  | 2027-05-08 | 2027-05-24 |  |
| CO-SL-DB-330 |  | Installation Works for Panel Board Concrete Foundations of Street Lighting Network for Alignment-RD-02 | 3d | 2027-05-08 | 2027-05-10 | PRO-R25-SL-DL-160, CO-SL-LP-430, CO-SL-CL-330, ENG-MT-SL-DB-A-100, MS-CS-SL SS, CO-EW-220, MS-MM-130, MS-MM-140 |
| CO-SL-DB-340 |  | Installation Works for Lighting Panel Boards of Street Lighting Network for Alignment-RD-02 | 7d | 2027-05-11 | 2027-05-24 | CO-SL-DB-330 |
|  | TE | **Telecom and Light Current Network** |  | 2027-04-18 | 2027-06-05 |  |
|  | PD | **Ducts Works** |  | 2027-05-25 | 2027-06-05 |  |
| CO-TE-DW-190 |  | Pipes Laying Works for Ducts of Telecom Network for Alignment-RD-02 | 5d | 2027-05-25 | 2027-05-30 | PRO-R25-TE-DL-100, ENG-SH-TE-A-110, ENG-MS-TE-A-110, ENG-MT-TE-A-100, PRO-TE-1DL-100, MS-CS-TE SS, MS-MM-130, MS-MM-140, CO-SD-MH-300, CO-SD-ML-190, CO-SD-CB-230, CO-SW-MH-300, CO-SW-ML-190, CO-PW-ML-190, CO-PW-VC-280, CO-PW-FH-220, CO-IR-ML-230, CO-MV-ML-330, CON-LV-ML-180, CON-LV-HC-180, CO-SL-LP-430, CO-SL-CL-330, CO-EW-220, CO-SL-DB-340 |
| CO-TE-DW-200 |  | Trench Backfilling and Compaction Works for Ducts of Telecom Network for Alignment-RD-02 | 5d | 2027-05-31 | 2027-06-05 | CO-TE-MH-220 FF, CO-TE-DW-190 |
|  | MH | **Manholes Works** |  | 2027-04-18 | 2027-04-27 |  |
| CO-TE-MH-200 |  | Excavation Works for Manholes of Telecom Network for Alignment-RD-02 | 3d | 2027-04-18 | 2027-04-20 | ENG-SH-TE-A-110, ENG-MS-TE-A-110, ENG-MT-TE-A-110, PRO-TE-1DL-110, MS-CS-TE SS, MS-MM-130, MS-MM-140, ENG-MT-TE-A-100, PRO-TE-1DL-100, CO-SD-MH-300, CO-SD-ML-190, CO-SD-CB-230, CO-SW-MH-300, CO-SW-ML-190, CO-PW-ML-190, CO-PW-VC-280, CO-PW-FH-220, CO-IR-ML-230, CO-MV-ML-330, CO-EW-220 |
| CO-TE-MH-210 |  | Installation Works for Manholes of Telecom Network for Alignment-RD-02 | 3d | 2027-04-21 | 2027-04-24 | CO-TE-MH-200, PRO-R25-TE-DL-110 |
| CO-TE-MH-220 |  | Backfilling Works for Manholes of Telecom Network for Alignment-RD-02 | 3d | 2027-04-25 | 2027-04-27 | CO-TE-MH-210 |
|  | DD | **CCTV, Telephone, MSN, ACs System Works** |  | 2027-04-28 | 2027-05-04 |  |
| CO-TE-CTV-180 |  | Installation of CCTV, Telephone, ACS and MSN Systems Cables for Alignment-RD-02 | 6d | 2027-04-28 | 2027-05-04 | CO-TE-MH-250, CO-TE-MH-160, PRO-R25-CTV-DL-100, CO-TE-CTV-210, CO-TE-MH-220, ENG-SH-MSN-A-120, ENG-SH-CTV-A-110, ENG-MS-CTV-A-110, ENG-MT-CTV-A-100, PRO-CTV-1DL-100, MS-CS-TE SS, MS-MM-130, MS-MM-140 |
|  | RD | **Road Works** |  | 2027-05-10 | 2027-06-14 |  |
|  | RD | **Roads Works** |  |  |  |  |
|  | LS | **Pavement Works** |  | 2027-05-10 | 2027-05-31 |  |
| CO-RD-PV-200 |  | Fixing of Curbstone for Sidewalks Pavement for Alignment-RD-02 | 5d | 2027-05-10 | 2027-05-20 | CO-PW-FH-220, CO-TE-MH-220, CON-LV-DP-180, ENG-MS-HS-A-10, PRO-R25-RD-DL-130, PRO-RD-1DL-150, PRO-R25-RD-DL-110, PRO-RD-1DL-110, CO-EW-220, CO-SD-ML-190, CO-SD-MH-300, CO-SD-CB-230, CO-SW-ML-190, CO-SW-MH-300, CO-PW-ML-190, CO-PW-VC-280, CO-IR-ML-230, CO-TSE-ML-280, CO-MV-ML-330, CO-SL-LP-430, CO-SL-CL-330, ENG-MS-RD-A-20, ENG-MS-RD-A-30, ENG-MS-RD-A-40, PRO-R25-RD-DL-100, CON-LV-HC-180, CON-LV-ML-180, ENG-MS-RD-A-10, ENG-SH-RD-A-100, ENG-SH-RD-A-110, MS-CS-RD SS, PRO-RD-1DL-100, MS-MM-130, MS-MM-140 |
| CO-RD-PV-210 |  | Fixing of Interlock Tiles for Sidewalks Pavement for Alignment-RD-02 | 9d | 2027-05-22 | 2027-05-31 | CO-RD-PV-200, ENG-MS-HS-A-10, PRO-R25-RD-DL-120, PRO-RD-1DL-140 |
|  | TS | **Traffic Signs Boards and Roads Marking** |  | 2027-06-06 | 2027-06-14 |  |

| ID | WBS | Task | Duration | Start | Finish | Predecessors |
| --- | --- | --- | --- | --- | --- | --- |
| CO-RD-F-RM-200 |  | Application of Road Marking Works For Road Works for Alignment-RD-02 | 4d | 2027-06-06 | 2027-06-09 | CO-PW-FH-220, CO-TE-MH-220, CON-LV-DP-180, CO-RD-PV-210, ENG-MS-MRK-A-10, PRO-R25-RD-DL-150, ENG-SH-MRK-A-110, PRO-RD-1DL-170, CO-RD-PV-200, PRO-R25-RD-DL-110, PRO-RD-1DL-110, CO-EW-220, CO-SD-ML-190, CO-SD-MH-300, CO-SD-CB-230, CO-SW-ML-190, CO-SW-MH-300, CO-PW-ML-190, CO-PW-VC-280, CO-IR-ML-230, CO-TSE-ML-280, CO-MV-ML-330, CO-SL-LP-430, CO-SL-CL-330, ENG-MS-RD-A-20, ENG-MS-RD-A-30, ENG-MS-RD-A-40, PRO-R25-RD-DL-100, CON-LV-HC-180, CON-LV-ML-180, ENG-MS-RD-A-10, ENG-SH-RD-A-100, ENG-SH-RD-A-110, MS-CS-RD SS, PRO-RD-1DL-100, MS-MM-130, MS-MM-140, CO-TE-DW-200 |
| CO-RD-F-TS-140 |  | Installation Works of Traffic Signs Boards For Road Works for Alignment-RD-02 | 4d | 2027-06-10 | 2027-06-14 | CO-RD-F-RM-200, ENG-MS-TSB-A-10, PRO-R25-RD-DL-140, ENG-SH-TSB-A-100, PRO-RD-1DL-160 |
|  | 3 | **Finishes for Infrastructure Networks** |  | 2027-04-18 | 2027-06-28 |  |
|  | 11 | **Storm Drainage Network** |  | 2027-05-25 | 2027-06-28 |  |
|  | TF | **Testing and Finishes** |  | 2027-05-25 | 2027-06-28 |  |
| CO-SD-ML-TF-120 |  | Testing Work for Pipes of Storm Drainage Network for Alignment-RD-02 | 6d | 2027-05-25 | 2027-05-31 | CO-SD-ML-190, CO-SD-PO-110-P1, CO-SD-PO-110-P2, CO-SD-ML-TF-130 |
| CO-SD-CB-TF-220 |  | Catch Basin Internal Finishes (Benching ) for Storm Drainage Network for Alignment-RD-02 | 6d | 2027-06-06 | 2027-06-12 | CO-SD-MH-300, PRO-SD-1DL-140, PRO-R25-SD-DL-140, PRO-R25-RD-DL-110, PRO-RD-1DL-110, CO-EW-220, CO-SD-ML-190, CO-SW-ML-190, CO-SW-MH-300, CO-PW-ML-190, CO-PW-VC-280, CO-IR-ML-230, CO-TSE-ML-280, CO-MV-ML-330, CO-SL-LP-430, CO-SL-CL-330, ENG-MS-RD-A-20, ENG-MS-RD-A-30, ENG-MS-RD-A-40, PRO-R25-RD-DL-100, CON-LV-HC-180, CON-LV-ML-180, ENG-MS-RD-A-10, ENG-SH-RD-A-100, ENG-SH-RD-A-110, MS-CS-RD SS, PRO-RD-1DL-100, MS-MM-130, MS-MM-140, CO-TE-DW-200, CO-PW-FH-220, CO-TE-MH-220, CON-LV-DP-180, CO-SD-CB-230 |
| CO-SD-MH-TF-250 |  | Testing Works for Manholes of Storm Drainage Network for Alignment-RD-02 | 6d | 2027-06-06 | 2027-06-12 | PRO-SD-1DL-140, PRO-R25-SD-DL-140, PRO-R25-RD-DL-110, PRO-RD-1DL-110, CO-EW-220, CO-SD-ML-190, CO-SD-CB-230, CO-SW-ML-190, CO-SW-MH-300, CO-PW-ML-190, CO-PW-VC-280, CO-IR-ML-230, CO-TSE-ML-280, CO-MV-ML-330, CO-SL-LP-430, CO-SL-CL-330, ENG-MS-RD-A-20, ENG-MS-RD-A-30, ENG-MS-RD-A-40, PRO-R25-RD-DL-100, CON-LV-HC-180, CON-LV-ML-180, ENG-MS-RD-A-10, ENG-SH-RD-A-100, ENG-SH-RD-A-110, MS-CS-RD SS, PRO-RD-1DL-100, MS-MM-130, MS-MM-140, CO-TE-DW-200, CO-PW-FH-220, CO-TE-MH-220, CON-LV-DP-180, CO-SD-ML-TF-130, CO-SD-MH-TF-210, CO-SD-MH-220, PRO-SD-1DL-100, CO-SD-MH-200, PRO-R25-SD-DL-100, CO-SD-MH-190, ENG-MT-SD-ML-A-100, MS-CS-SD SS, CO-EW-230, ENG-MS-SD-ML-A-110, ENG-MT-SD-ML-A-110, ENG-SH-SD-ML-A-110, CO-SD-MH-180, CO-SD-MH-260, PRO-R25-RD-DL-170, PRO-RD-1DL-130, CO-TE-MH-190, CO-TE-DW-160, CO-SL-CL-300, CO-SL-LP-380, CON-LV-HC-150, CON-LV-ML-150, CO-MV-ML-300, CO-IR-ML-180, CO-PW-FH-190, CO-PW-VC-250, CO-PW-ML-160, CO-TSE-ML-230, CO-SW-ML-160, CO-SW-MH-250, CO-SD-CB-200, CO-SD-ML-160, CO-EW-210_R, CO-SL-LP-520, CO-RD-PB-150 SS, CO-IR-TF-210, CO-TE-CTV-210, CO-SD-ML-220, CO-PW-ML-220, CO-PW-VC-310, CO-TSE-ML-330, CO-MV-ML-360, CO-SL-LP-480, CO-SL-CL-360, CON-LV-HC-210, CON-LV-ML-210, CO-TE-DW-240, CO-PW-FH-250, CO-TE-MH-250, CO-RD-PB-140, CO-IR-ML-380, CO-SD-ML-130, PRO-R25-SD-DL-110, PRO-R25-SD-DL-130, PRO-SD-1DL-130, PRO-SD-1DL-120, ENG-MT-SD-CB-A-110, ENG-SH-SD-CB-A-110, ENG-MS-SD-CB-A-110, PRO-SW-1DL-110 SS, ENG-MT-SW-ML-A-100, ENG-SH-SW-ML-A-110, MS-CS-SW SS, ENG-MS-SW-ML-A-110, PRO-SW-1DL-100, ENG-MT-SW-ML-A-110, PRO-LV-DP-1DL-100, PRO-LV-DP-DL-100, CON-LV-DP-120, CON-LV-DP-190, CON-LV-DP-110, ENG-SH-MSN-A-120, ENG-SH-CTV-A-110, ENG-MS-CTV-A-110, ENG-MT-CTV-A-100, PRO-CTV-1DL-100, MS-CS-TE SS, CO-TE-MH-160, CO-TE-CTV-110, CO-SD-MH-300, CO-SD-ML-TF-120 |
| CO-SD-CB-TF-200 |  | Testing Works for Catch Basins of Storm Drainage Network for Alignment-RD-02 | 6d | 2027-06-13 | 2027-06-19 | CO-SD-CB-230, CO-SD-ML-TF-120, CO-SD-CB-TF-220 |
| CO-SD-CB-TF-210 |  | Install Catch Basin Cover Works for External Finishes of Storm Drainage Network for Alignment-RD-02 | 8d | 2027-06-20 | 2027-06-28 | CO-PW-FH-220, CO-TE-MH-220, CON-LV-DP-180, CO-SD-CB-TF-220, PRO-SD-1DL-150, PRO-R25-SD-DL-150, CO-SD-CB-230, CO-SD-CB-TF-200, PRO-R25-RD-DL-110, PRO-RD-1DL-110, CO-EW-220, CO-SD-ML-190, CO-SD-MH-300, CO-SW-ML-190, CO-SW-MH-300, CO-PW-ML-190, CO-PW-VC-280, CO-IR-ML-230, CO-TSE-ML-280, CO-MV-ML-330, CO-SL-LP-430, CO-SL-CL-330, ENG-MS-RD-A-20, ENG-MS-RD-A-30, ENG-MS-RD-A-40, PRO-R25-RD-DL-100, CON-LV-HC-180, CON-LV-ML-180, ENG-MS-RD-A-10, ENG-SH-RD-A-100, ENG-SH-RD-A-110, MS-CS-RD SS, PRO-RD-1DL-100, MS-MM-130, MS-MM-140, CO-TE-DW-200 |
|  | 10 | **Sewage Network** |  | 2027-05-08 | 2027-06-02 |  |
|  | TF | **Testing and Finishes** |  | 2027-05-08 | 2027-06-02 |  |
| CO-SW-TF-270 |  | Final Testing For Main Line of Sewage Network for Alignment-RD-02 | 18d | 2027-05-08 | 2027-06-02 | PRO-SW-1DL-110, PRO-R25-SW-DL-110, ENG-MT-SW-ML-A-100, ENG-SH-SW-ML-A-110, MS-CS-SW SS, CO-EW-200, MS-MM-130, MS-MM-140, ENG-MS-SW-ML-A-110, CO-SD-MH-220, CO-SD-ML-130, PRO-R25-SD-DL-110, PRO-R25-SD-DL-130, PRO-SD-1DL-130, PRO-SD-1DL-120, ENG-MT-SD-CB-A-110, ENG-SH-SD-CB-A-110, ENG-MS-SD-CB-A-110, MS-CS-SD SS, PRO-SW-1DL-100, PRO-R25-SW-DL-100, ENG-MT-SW-ML-A-110, PRO-SD-1DL-140, PRO-R25-SD-DL-140, CO-SD-MH-260, PRO-R25-RD-DL-170, PRO-RD-1DL-130, PRO-R25-RD-DL-100, PRO-RD-1DL-100, MS-CS-RD SS, ENG-SH-RD-A-100, ENG-SH-RD-A-110, ENG-MS-RD-A-30, ENG-MS-RD-A-20, ENG-MS-RD-A-10, ENG-MS-RD-A-40, CO-TE-MH-190, CO-TE-DW-160, CO-SL-CL-300, CO-SL-LP-380, CON-LV-HC-150, CON-LV-ML-150, CO-MV-ML-300, CO-IR-ML-180, CO-PW-FH-190, CO-PW-VC-250, CO-PW-ML-160, CO-TSE-ML-230, CO-SW-ML-160, CO-SW-MH-250, CO-SD-CB-200, CO-SD-ML-160, CO-EW-210_R, CO-SL-LP-520, PRO-SW-1DL-110 SS, CO-EW-230, PRO-SD-1DL-100, CO-SD-MH-200, PRO-R25-SD-DL-100, CO-SD-MH-190, ENG-MT-SD-ML-A-100, ENG-MS-SD-ML-A-110, ENG-MT-SD-ML-A-110, ENG-SH-SD-ML-A-110, CO-SD-MH-180, CO-SD-ML-220, CO-SW-ML-190 |
| CO-SW-TF-290 |  | Testing Works for Main Line Manholes of Sewage Network for Alignment-RD-02 | 18d | 2027-05-08 | 2027-06-02 | CO-SW-ML-190, PRO-SW-1DL-110, PRO-R25-SW-DL-110, ENG-MT-SW-ML-A-100, ENG-SH-SW-ML-A-110, MS-CS-SW SS, CO-EW-200, MS-MM-130, MS-MM-140, ENG-MS-SW-ML-A-110, CO-SD-MH-220, CO-SD-ML-130, PRO-R25-SD-DL-110, PRO-R25-SD-DL-130, PRO-SD-1DL-130, PRO-SD-1DL-120, ENG-MT-SD-CB-A-110, ENG-SH-SD-CB-A-110, ENG-MS-SD-CB-A-110, MS-CS-SD SS, PRO-SW-1DL-100, PRO-R25-SW-DL-100, ENG-MT-SW-ML-A-110, PRO-SD-1DL-140, PRO-R25-SD-DL-140, CO-SD-MH-260, PRO-R25-RD-DL-170, PRO-RD-1DL-130, PRO-R25-RD-DL-100, PRO-RD-1DL-100, MS-CS-RD SS, ENG-SH-RD-A-100, ENG-SH-RD-A-110, ENG-MS-RD-A-30, ENG-MS-RD-A-20, ENG-MS-RD-A-10, ENG-MS-RD-A-40, CO-TE-MH-190, CO-TE-DW-160, CO-SL-CL-300, CO-SL-LP-380, CON-LV-HC-150, CON-LV-ML-150, CO-MV-ML-300, CO-IR-ML-180, CO-PW-FH-190, CO-PW-VC-250, CO-PW-ML-160, CO-TSE-ML-230, CO-SW-ML-160, CO-SW-MH-250, CO-SD-CB-200, CO-SD-ML-160, CO-EW-210_R, CO-SL-LP-520, PRO-SW-1DL-110 SS, CO-EW-230, PRO-SD-1DL-100, CO-SD-MH-200, PRO-R25-SD-DL-100, CO-SD-MH-190, ENG-MT-SD-ML-A-100, ENG-MS-SD-ML-A-110, ENG-MT-SD-ML-A-110, ENG-SH-SD-ML-A-110, CO-SD-MH-180, CO-SD-ML-220, CO-SW-MH-300 |
|  | 9 | **Potable Water Network** |  | 2027-05-04 | 2027-06-13 |  |
|  | TF | **Testing and Finishes** |  | 2027-05-04 | 2027-06-13 |  |
| CO-PW-TF-170 |  | Fire Hydrant Finishies (S.Box + Safety + Marker Post ) of Potable Water Network for Alignment-RD-02 | 14d | 2027-05-04 | 2027-05-25 | CO-PW-FH-220, ENG-MT-PW-TF-A-100, CO-PW-TF-200 SS |
| CO-PW-TF-180 |  | Final Finishes works and Covers for Valves and Valve Chambers for Alignment-RD-02 | 8d | 2027-05-26 | 2027-06-03 | CO-PW-VC-280, ENG-MT-PW-TF-A-100, PRO-PW-1DL-130, PRO-R25-PW-DL-130, CO-PW-TF-170, CO-PW-TF-210 |
| CO-PW-TF-160 |  | Testing of Potable Water Network for Alignment-RD-02 | 8d | 2027-06-05 | 2027-06-13 | ENG-MT-IR-ML-A-110, PRO-IR-1DL-110, PRO-R25-IR-DL-110, PRO-IR-1DL-100, CO-PW-ML-110, PRO-R25-IR-DL-100, ENG-SH-IR-ML-A-110, ENG-MS-IR-ML-A-110, ENG-MT-IR-ML-A-100, CO-PW-ML-100, MS-CS-IR SS, CO-EW-200, MS-MM-130, MS-MM-140, CO-IR-ML-170, CO-IR-ML-160, CO-EW-240, CO-IR-ML-150, CO-SW-MH-250, CO-SW-MH-240, CO-SW-MH-230, PRO-SW-1DL-110, PRO-R25-SW-DL-110, CO-SW-MH-220, ENG-MT-SW-ML-A-100, ENG-SH-SW-ML-A-110, MS-CS-SW SS, ENG-MS-SW-ML-A-110, CO-SD-MH-380, CO-SD-ML-250, CO-SW-MH-210, CO-SD-CB-200, PRO-R25-SD-DL-110, PRO-R25-SD-DL-130, PRO-SD-1DL-130, PRO-SD-1DL-120, CO-SD-CB-190, ENG-MT-SD-CB-A-110, ENG-SH-SD-CB-A-110, ENG-MS-SD-CB-A-110, MS-CS-SD SS, CO-SD-CB-180, CO-SW-ML-160, PRO-SW-1DL-100, PRO-R25-SW-DL-100, CO-SW-ML-150, ENG-MT-SW-ML-A-110, CO-SW-ML-140, CO-PW-ML-190, CO-PW-TF-180, CO-PW-TF-190, CO-IR-ML-240, CO-IR-ML-190 |
|  | 13 | **Irrigation Network** |  | 2027-05-22 | 2027-05-25 |  |
|  | TF | **Testing and Finishes** |  | 2027-05-22 | 2027-05-25 |  |
| CO-IR-TF-180 |  | Final Testing (pressure tests) of Irrigation Network for Alignment-RD-02 | 4d | 2027-05-22 | 2027-05-25 | CO-PW-TF-110, CO-PW-TF-130, ENG-MT-IR-ML-A-110, PRO-IR-1DL-110, PRO-R25-IR-DL-110, PRO-IR-1DL-100, CO-PW-ML-110, PRO-R25-IR-DL-100, ENG-SH-IR-ML-A-110, ENG-MS-IR-ML-A-110, ENG-MT-IR-ML-A-100, CO-PW-ML-100, MS-CS-IR SS, CO-EW-200, MS-MM-130, MS-MM-140, CO-IR-ML-240, CO-IR-TF-210 |
|  | 1 | **Treated Sewage Effluent (Tse)** |  | 2027-06-06 | 2027-06-12 |  |
|  | TF | **Testing and Finishes** |  | 2027-06-06 | 2027-06-12 |  |
| CO-TSE-TF-190 |  | Final Testing (pressure tests) of Treated Sewage Effluent (Tse) for Alignment-RD-02 | 6d | 2027-06-06 | 2027-06-12 | CO-TSE-ML-280, CO-TSE-TF-200 |
|  | 14 | **Medium Voltage Network** |  | 2027-04-18 | 2027-04-24 |  |
|  | TT | **Termination and Testing Works** |  | 2027-04-18 | 2027-04-24 |  |
| CO-MV-TF-240 |  | Testing and Termination Works of Medium Voltage Network for Alignment-RD-02 | 6d | 2027-04-18 | 2027-04-24 | CO-MV-ML-330, CO-MV-TF-250 |
|  | 6 | **Low Voltage Network** |  | 2027-05-09 | 2027-05-23 |  |
|  | TT | **Termination and Testing Works** |  | 2027-05-09 | 2027-05-23 |  |
| CON-LV-TT-150 |  | Testing and Termination Works for Distribution Pillars Units of Low Voltage Network for Alignment-RD-02 | 4d | 2027-05-09 | 2027-05-12 | CON-LV-TT-110, CO-MV-TF-250, PRO-LV-DP-1DL-100, PRO-LV-DP-DL-100, CON-LV-DP-120, CON-LV-DP-190, CON-LV-DP-110, PRO-LV-TT-1DL-100, PRO-LV-TT-DL-100, CON-LV-DP-180 |
| CON-LV-TT-140 |  | Testing and Termination Works for Substation Low Voltage Panel Boards of Low Voltage Network for Alignment-RD-02 | 4d | 2027-05-13 | 2027-05-23 | CON-LV-TT-150, PRO-LV-TT-1DL-100, PRO-LV-TT-DL-100, CON-LV-HC-180, CON-LV-ML-180 |
|  | 1 | **Earthing System Works** |  | 2027-05-13 | 2027-05-20 |  |
| CON-LV-ES-120 |  | Earthing System Works for Distribution Pillars Units of Low Voltage Network for Alignment-RD-02 | 2d | 2027-05-13 | 2027-05-20 | CON-LV-ES-100, PRO-LV-DP-1DL-100, PRO-LV-DP-DL-100, CON-LV-DP-120, CON-LV-DP-190, CON-LV-DP-110, PRO-LV-TT-1DL-100, PRO-LV-TT-DL-100, CON-LV-TT-110, CO-MV-TF-250, CON-LV-TT-150, PRO-LV-DP-1DL-110, PRO-LV-DP-DL-120, CON-LV-DP-180 |
|  | 12 | **Street Lighting Network** |  | 2027-05-11 | 2027-06-03 |  |
|  | TR | **Termination and Testing Works** |  | 2027-05-11 | 2027-06-03 |  |
| CO-SL-LP-420 |  | Installation Works for Lighting Fixtures With Drop Wire of Street Lighting Network for Alignment-RD-02 | 2d | 2027-05-11 | 2027-05-12 | CO-TE-CTV-210, CO-TE-CTV-110, CO-SL-DB-340 SS, CO-SL-LP-430, ENG-MT-SL-A-120, PRO-R25-SL-DL-140 |
| CO-SL-TF-440 |  | Termination Works For Panel Board Cables of Street Lighting Network for Alignment-RD-02 | 6d | 2027-05-25 | 2027-05-31 | CO-SL-LP-470, CO-SL-ES-290, CO-SL-LP-370, CO-SL-ES-250, PRO-R25-SL-DL-160 SS, CO-SL-LP-380, CO-SL-CL-300, ENG-MT-SL-DB-A-100, MS-CS-SL SS, CO-EW-210_R, MS-MM-130, MS-MM-140, CO-SL-LP-580, CO-SL-ES-330, PRO-R25-SL-DL-160, CO-SL-LP-570, CO-SL-CL-420, CO-EW-200, CO-SL-LP-480, CO-SL-CL-360, CO-EW-230, CO-SL-DB-340, CO-SL-LP-420, PRO-R25-SL-DL-170 |
| CO-SL-TF-450 |  | Testing Works for Lighting Poles of Street Lighting Network for Alignment-RD-02 | 2d | 2027-06-02 | 2027-06-03 | CO-SL-DB-340, CO-SL-LP-420, CO-SL-ES-270, PRO-R25-SL-DL-130, CO-SL-TF-490 SS |
| CO-SL-TF-460 |  | Testing Works For Panel Board Cables of Street Lighting Network for Alignment-RD-02 | 2d | 2027-06-02 | 2027-06-03 | CO-SL-LP-470, CO-SL-ES-290, CO-SL-LP-370, CO-SL-ES-250, PRO-R25-SL-DL-160 SS, CO-SL-LP-380, CO-SL-CL-300, ENG-MT-SL-DB-A-100, MS-CS-SL SS, CO-EW-210_R, MS-MM-130, MS-MM-140, CO-SL-LP-580, CO-SL-ES-330, PRO-R25-SL-DL-160, CO-SL-LP-570, CO-SL-CL-420, CO-EW-200, CO-SL-LP-480, CO-SL-CL-360, CO-EW-230, CO-SL-DB-340, CO-SL-LP-420, CO-SL-ES-270 |
|  | ES | **Earthing System Works** |  | 2027-05-13 | 2027-06-01 |  |
| CO-SL-ES-260 |  | Install Earthing System Works for Lighting Poles of Street Lighting Network for Alignment-RD-02 | 6d | 2027-05-13 | 2027-05-25 | CO-SL-LP-420, ENG-MT-SL-ES-A-100, PRO-R25-SL-DL-150, CO-SL-ES-280 |
| CO-SL-ES-270 |  | Install Earthing System Works for Lighting Panel Boards of Street Lighting Network for Alignment-RD-02 | 6d | 2027-05-26 | 2027-06-01 | CO-SL-ES-260, PRO-R25-SL-DL-150, CO-SL-ES-290 |
|  | 3 | **Telecom and Light Current Network** |  | 2027-05-13 | 2027-05-25 |  |
|  | 1 | **Testing and Finishes** |  | 2027-05-13 | 2027-05-25 |  |
| CO-TE-CTV-TF-220 |  | Testing and Interface modules with Telecom for Alignment-RD-02 | 3d | 2027-05-13 | 2027-05-22 | CO-TE-CTV-210, CO-TE-CTV-110, CO-TE-CTV-TF-260, CO-TE-CTV-TF-340, CO-TE-CTV-180 |
| CO-TE-CTV-TF-350 |  | Testing and Interface modules with CCTV, Telephone, MSN and Access Control for Alignment-RD-02 | 3d | 2027-05-23 | 2027-05-25 | CO-TE-CTV-210, CO-TE-CTV-110, CO-TE-CTV-TF-260, CO-TE-CTV-TF-340, CO-TE-CTV-TF-220, CO-TE-CTV-180 |
|  | 3 | **Alignment-RD-03-1** |  | 2026-11-02 | 2027-05-29 |  |
|  | EW | **Earthworks** |  | 2026-11-02 | 2026-11-15 |  |
|  | EW | **Earthworks** |  | 2026-11-02 | 2026-11-15 |  |
| CO-EW-200 |  | Excavation and Backfilling Works Upto Design Level for Earthworks for Alignment-RD-03-1 | 12d | 2026-11-02 | 2026-11-15 | MS-CS-PS SS, MOB-30, MOB-20, MOB-80, MOB-40, MOB-50, MOB-60, MOB-10, MOB-70, PRE-CON-MDC-10, PRE-CON-MDC-20, PRE-CON-MDC-30, PRE-CON-MDC-40, PRE-CON-MDC-50, PRE-CON-MDC-60, PRE-CON-MDC-70, PRE-CON-MDC-80, MS-MM-100, MS-MM-130, MS-MM-140, MS-MM-150 |
|  | SD | **Storm Drainage Network** |  | 2026-11-16 | 2026-12-23 |  |
|  | MH | **Manholes** |  | 2026-11-16 | 2026-12-23 |  |
| CO-SD-MH-180 |  | Trench Excavation and Bedding Works for Manholes of Storm Drainage Network for Alignment-RD-03-1 | 10d | 2026-11-16 | 2026-11-26 | ENG-MT-SD-ML-A-100, MS-CS-SD SS, CO-EW-200, ENG-MS-SD-ML-A-110, ENG-MT-SD-ML-A-110, ENG-SH-SD-ML-A-110, MS-MM-130, MS-MM-140 |
| CO-SD-MH-190 |  | Install RC Footing Works for Manholes of Storm Drainage Network for Alignment-RD-03-1 | 3d | 2026-11-28 | 2026-11-30 | CO-SD-MH-180, PRO-R25-SD-DL-100 FF, PRO-SD-1DL-100 |
| CO-SD-MH-200 |  | Install RC Wall Rings & Slab Works for Manholes of Storm Drainage Network for Alignment-RD-03-1 | 10d | 2026-12-01 | 2026-12-12 | CO-SD-MH-190, PRO-SD-1DL-100 |
| CO-SD-MH-220 |  | Backfilling Works for Manholes of Storm Drainage Network for Alignment-RD-03-1 | 10d | 2026-12-13 | 2026-12-23 | CO-SD-MH-200 |
|  | ML | **Main Line Sections** |  | 2026-12-13 | 2026-12-23 |  |
| CO-SD-ML-100 |  | Trench Excavation and Bedding Works for Main Lines of Storm Drainage Network for Alignment-RD-03-1 | 3d | 2026-12-13 | 2026-12-15 | MS-CS-SD FF, CO-EW-200, ENG-SH-SD-ML-A-110, ENG-MS-SD-ML-A-110, ENG-MT-SD-ML-A-110, MS-CS-SD SS, MS-MM-130, MS-MM-140, CO-SD-MH-200, CO-SD-MH-180 SS, CO-SD-MH-180 FF |
| CO-SD-ML-120 |  | Pipes Laying Works for Main Lines of Storm Drainage Network for Alignment-RD-03-1 | 3d | 2026-12-16 | 2026-12-19 | CO-SD-ML-100, PRO-R25-SD-DL-120 FF, PRO-SD-1DL-110, CO-SD-MH-200 |
| CO-SD-ML-130 |  | Trench Backfilling and Compaction Works for Main Lines of Storm Drainage Network for Alignment-RD-03-1 | 4d | 2026-12-20 | 2026-12-23 | CO-SD-ML-120, CO-SD-MH-220 FF |
|  | CB | **Catch Basin Sections** |  |  |  |  |
|  | SW | **Sewage Network** |  |  |  |  |
|  | 1 | **Manholes** |  |  |  |  |
|  | ML | **Main Line Sections** |  |  |  |  |
|  | TSE | **Treated Sewage Effluent (Tse)** |  | 2026-12-31 | 2027-05-27 |  |
| CO-TSE-ML-150 |  | Trench Excavation and Bedding Works for Main Lines of Treated Sewage Effluent (Tse) for Alignment-RD-03-1 | 4d | 2026-12-31 | 2027-01-04 | PRO-SW-1DL-110, PRO-R25-SW-DL-110, ENG-MT-SW-ML-A-100, ENG-SH-SW-ML-A-110, MS-CS-SW SS, ENG-MS-SW-ML-A-110, CO-SD-MH-220, CO-SD-ML-130, PRO-R25-SD-DL-110, PRO-R25-SD-DL-130, PRO-SD-1DL-130, PRO-SD-1DL-120, ENG-MT-SD-CB-A-110, ENG-SH-SD-CB-A-110, ENG-MS-SD-CB-A-110, MS-CS-SD SS, PRO-SW-1DL-100, PRO-R25-SW-DL-100, ENG-MT-SW-ML-A-110, MS-CS-TSE FF, ENG-SH-TSE-ML-A-120, ENG-MS-TSE-ML-A-120, ENG-MT-IR-ML-A-120, MS-CS-TSE SS, CO-EW-200, MS-MM-130, MS-MM-140 |
| CO-TSE-ML-160 |  | Pipes Laying Works for Main Lines of Treated Sewage Effluent (Tse) for Alignment-RD-03-1 | 4d | 2027-01-05 | 2027-01-09 | CO-TSE-ML-150, PRO-TSE-1DL-120, PRO-R25-TSE-DL-120 |
| CO-TSE-ML-170 |  | Installation Works for Main Line Valves of Treated Sewage Effluent (Tse) for Alignment-RD-03-1 | 6d | 2027-01-10 | 2027-01-16 | CO-TSE-ML-160 |
| CO-TSE-ML-190 |  | Installation Works for Valve and Washout Chambers of Treated Sewage Effluent (Tse) for Alignment-RD-03-1 | 6d | 2027-01-17 | 2027-01-23 | CO-TSE-ML-170 |

| ID | WBS | Task | Duration | Start | Finish | Predecessors |
| --- | --- | --- | --- | --- | --- | --- |
| CO-TSE-ML-180 |  | Trench Backfilling and Compaction Works for Treated Sewage Effluent (Tse) for Alignment-RD-03-1 | 5d | 2027-01-24 | 2027-01-28 | CO-TSE-ML-190 |
|  | TA | **Treated Sewage Effluent (Tse) Storage Tank** |  | 2027-05-22 | 2027-05-27 |  |
| CO-TSE-TF-180 |  | Installation of Storage Tank of Treated Sewage Effluent (Tse) for Alignment-RD-03-1 | 6d | 2027-05-22 | 2027-05-27 | CO-PW-TF-130, CO-TSE-ML-180 |
|  | PW | **Potable Water Network** |  | 2027-01-30 | 2027-05-20 |  |
|  | ML | **Main Line Sections** |  | 2027-01-30 | 2027-02-17 |  |
| CO-PW-ML-100 |  | Trench Excavation and Bedding Works for Main Lines of Potable Water Network for Alignment-RD-03-1 | 5d | 2027-01-30 | 2027-02-03 | PRO-SW-1DL-110, PRO-R25-SW-DL-110, ENG-MT-SW-ML-A-100, ENG-SH-SW-ML-A-110, MS-CS-SW SS, ENG-MS-SW-ML-A-110, CO-SD-MH-220, CO-SD-ML-130, PRO-R25-SD-DL-110, PRO-R25-SD-DL-130, PRO-SD-1DL-130, PRO-SD-1DL-120, ENG-MT-SD-CB-A-110, ENG-SH-SD-CB-A-110, ENG-MS-SD-CB-A-110, MS-CS-SD SS, PRO-SW-1DL-100, PRO-R25-SW-DL-100, ENG-MT-SW-ML-A-110, MS-CS-PW FF, ENG-SH-PW-ML-A-110, ENG-MS-PW-ML-A-110, ENG-MT-PW-ML-A-100, MS-CS-PW SS, CO-EW-200, MS-MM-130, MS-MM-140, CO-TSE-ML-180, CO-PW-ML-140 |
| CO-PW-ML-110 |  | Pipes Laying and accessories for Main Lines of Potable Water Network for Alignment-RD-03-1 | 5d | 2027-02-04 | 2027-02-09 | CO-PW-ML-100, PRO-PW-1DL-100, PRO-R25-PW-DL-100 |
| CO-PW-ML-130 |  | Trench Backfilling and Compaction Works for Main Lines of Potable Water Network for Alignment-RD-03-1 | 7d | 2027-02-10 | 2027-02-17 | CO-PW-ML-110 |
|  | VC | **Valve Chamber** |  | 2027-02-01 | 2027-02-20 |  |
| CO-PW-VC-170 |  | Excavation Works for Main Line Valves and Valve Chambers of Potable Water Network for Alignment-RD-03-1 | 3d | 2027-02-01 | 2027-02-03 | ENG-MT-PW-ML-A-110, MS-CS-PW SS, CO-PW-ML-100 SS, CO-PW-ML-100 FF, MS-MM-130, MS-MM-140 |
| CO-PW-VC180 |  | Installation of Valve Chambers of Potable Water Network for Alignment-RD-03-1 | 3d | 2027-02-04 | 2027-02-07 | CO-PW-VC-170, PRO-R25-PW-DL-120 |
| CO-PW-VC-190 |  | Installation Works for Valves of Potable Water Network for Alignment-RD-03-1 | 3d | 2027-02-14 | 2027-02-16 | CO-PW-VC180, PRO-PW-1DL-110, PRO-R25-PW-DL-110 |
| CO-PW-VC-220 |  | Backfilling Works for Main Line Valves and Valve Chambers of Potable Water Network for Alignment-RD-03-1 | 3d | 2027-02-17 | 2027-02-20 | CO-PW-VC-190, CO-PW-ML-130 FF |
|  | FH | **Fire Hydrant** |  | 2027-02-04 | 2027-02-20 |  |
| CO-PW-FH-140 |  | Excavation Works for Fire Hydrants of Potable Water Network for Alignment-RD-03-1 | 2d | 2027-02-04 | 2027-02-06 | CO-PW-VC-170, ENG-SH-PW-FH-A-110, ENG-MT-PW-FH-A-100, MS-CS-PW SS, CO-EW-200, MS-MM-130, MS-MM-140 |
| CO-PW-FH-150 |  | Installation Works for Fire Hydrant of Potable Water Network for Alignment-RD-03-1 | 2d | 2027-02-10 | 2027-02-11 | CO-PW-FH-140, PRO-PW-1DL-120, CO-PW-ML-110 |
| CO-PW-FH-160 |  | Trench Backfilling and Compaction Works for Fire Hydrants of Potable Water Network for Alignment-RD-03-1 | 2d | 2027-02-18 | 2027-02-20 | CO-PW-FH-150, CO-PW-VC-220 FF |
|  | TA | **Potable Water Network Storage Tank** |  | 2027-05-09 | 2027-05-20 |  |
| CO-PW-TF-130 |  | Installation of Storage Tank of Potable Water Network for Alignment-RD-03-1 | 6d | 2027-05-09 | 2027-05-20 | CO-PW-ML-130, CO-PW-TF-100 |
|  | IR | **Irrigation Network** |  |  |  |  |
|  | ML | **Main Line Pipes** |  |  |  |  |
|  | LV | **Low Voltage Network** |  | 2027-02-18 | 2027-04-17 |  |
|  | MLVC | **Main Low Voltage Cables Works ( Cable 300 MM )** |  | 2027-02-18 | 2027-03-15 |  |
| CON-LV-ML-100 |  | Trench Excavation and Bedding Works for Main Cable of Low Voltage Network for Alignment-RD-03-1 | 8d | 2027-02-18 | 2027-02-27 | CO-SD-ML-130, PRO-R25-SD-DL-110, PRO-R25-SD-DL-130, PRO-SD-1DL-130, PRO-SD-1DL-120, ENG-MT-SD-CB-A-110, ENG-SH-SD-CB-A-110, ENG-MS-SD-CB-A-110, MS-CS-SD SS, PRO-SW-1DL-110, PRO-R25-SW-DL-110, ENG-MT-SW-ML-A-100, ENG-SH-SW-ML-A-110, MS-CS-SW SS, ENG-MS-SW-ML-A-110, CO-SD-MH-220, PRO-SW-1DL-100, PRO-R25-SW-DL-100, ENG-MT-SW-ML-A-110, MS-CS-LV FF, CO-PW-ML-130, ENG-SH-LV-A-120, ENG-MS-MV-A-120, MS-CS-LV SS, CO-EW-200, MS-MM-130, MS-MM-140 |
| CON-LV-ML-110 |  | Cable Laying Works for Main Cable of Low Voltage Network for Alignment-RD-03-1 | 7d | 2027-02-28 | 2027-03-07 | CON-LV-ML-100, PRO-LV-ML-1DL-100, PRO-LV-ML-DL-100 |
| CON-LV-ML-120 |  | Trench Backfilling and Compaction Works for Main Cable of Low Voltage Network for Alignment-RD-03-1 | 4d | 2027-03-08 | 2027-03-15 | CON-LV-ML-110 |
|  | SLVC | **Service Low Voltage Cables Works ( Cable 70 MM )** |  | 2027-02-28 | 2027-04-03 |  |
| CON-LV-HC-100 |  | Trench Excavation and Bedding Works for Service Cable of Low Voltage Network for Alignment-RD-03-1 | 4d | 2027-02-28 | 2027-03-03 | PRO-R25-SD-DL-110, PRO-R25-SD-DL-130, PRO-SD-1DL-130, PRO-SD-1DL-120, ENG-MT-SD-CB-A-110, ENG-SH-SD-CB-A-110, ENG-MS-SD-CB-A-110, MS-CS-SD SS, PRO-SW-1DL-110, PRO-R25-SW-DL-110, ENG-MT-SW-ML-A-100, ENG-SH-SW-ML-A-110, MS-CS-SW SS, ENG-MS-SW-ML-A-110, PRO-SW-1DL-100, PRO-R25-SW-DL-100, ENG-MT-SW-ML-A-110, CON-LV-ML-100, ENG-MS-MV-A-120, MS-CS-LV SS, CO-EW-200, ENG-SH-LV-A-120, MS-MM-130, MS-MM-140, CO-PW-ML-130, CO-PW-VC-220, CO-PW-FH-160, CO-TSE-ML-180, CO-SD-ML-130, CO-SD-MH-220 |
| CON-LV-HC-110 |  | Cable Laying Works for Service Cable of Low Voltage Network for Alignment-RD-03-1 | 7d | 2027-03-23 | 2027-03-30 | PRO-LV-DP-DL-120, CON-LV-HC-100, CON-LV-ML-110, PRO-LV-HC-1DL-100, PRO-LV-HC-DL-100 |
| CON-LV-HC-120 |  | Trench Backfilling and Compaction Works for Service Cable of Low Voltage Network for Alignment-RD-03-1 | 3d | 2027-03-31 | 2027-04-03 | CON-LV-HC-110, CON-LV-ML-120 |
|  | DP | **Distribution Pillars Works** |  | 2027-04-04 | 2027-04-17 |  |
| CON-LV-DP-100 |  | Foundation Excavation Works for Distribution Pillars of Low Voltage Network for Alignment-RD-03-1 | 4d | 2027-04-04 | 2027-04-07 | ENG-MS-MV-A-120, MS-CS-LV SS, CO-EW-200, MS-MM-130, MS-MM-140, CON-LV-HC-120 |
| CON-LV-DP-110 |  | Pouring Plain Concrete For Distribution Pillar Units of Low Voltage Network for Alignment-RD-03-1 | 4d | 2027-04-08 | 2027-04-12 | CON-LV-DP-100 |
| CON-LV-DP-120 |  | Installation Works for Distribution Pillar Units of Low Voltage Network for Alignment-RD-03-1 | 4d | 2027-04-13 | 2027-04-17 | CON-LV-DP-110, PRO-LV-DP-1DL-100, PRO-LV-DP-DL-100 |
|  | SL | **Street Lighting Network** |  | 2027-03-23 | 2027-04-14 |  |
|  | LP | **Lighting Poles Works** |  | 2027-03-23 | 2027-04-10 |  |
| CO-SL-LP-550 |  | Installation Works for Lighting Poles Foundation of Street Lighting Network for Alignment-RD-03-1 | 5d | 2027-03-23 | 2027-03-28 | ENG-SH-SL-A-110, ENG-MS-SL-A-110, ENG-MT-SL-A-100, MS-CS-SL SS, MS-MM-130, MS-MM-140, CO-EW-200, CO-MV-ML-370, PRO-R25-SL-DL-110 |
| CO-SL-LP-560 |  | Installation Works for Lighting Poles of Street Lighting Network for Alignment-RD-03-1 | 5d | 2027-03-29 | 2027-04-03 | CO-SL-LP-550, ENG-MT-SL-A-110, PRO-R25-SL-DL-120 |
| CO-SL-LP-570 |  | Backfilling Works for Lighting Poles of Street Lighting Network for Alignment-RD-03-1 | 6d | 2027-04-04 | 2027-04-10 | CO-SL-LP-560 |
|  | CW | **Cabling Works** |  | 2027-04-04 | 2027-04-14 |  |
| CO-SL-CL-410 |  | Cable Laying Works for Street Lighting Network for Alignment-RD-03-1 | 5d | 2027-04-04 | 2027-04-08 | ENG-SH-SL-A-110, ENG-MS-SL-A-110, ENG-MT-SL-ML-A-100, PRO-SL-1DL-100, MS-CS-SL SS, MS-MM-130, MS-MM-140, CO-SL-LP-560, CO-SD-MH-220, CO-SD-ML-130, CO-TSE-ML-180, CO-PW-ML-130, CO-PW-VC-220, CO-PW-FH-160, CO-EW-200, PRO-R25-SD-DL-110, PRO-R25-SD-DL-130, PRO-SD-1DL-130, PRO-SD-1DL-120, ENG-MT-SD-CB-A-110, ENG-SH-SD-CB-A-110, ENG-MS-SD-CB-A-110, MS-CS-SD SS, PRO-SW-1DL-110, PRO-R25-SW-DL-110, ENG-MT-SW-ML-A-100, ENG-SH-SW-ML-A-110, MS-CS-SW SS, ENG-MS-SW-ML-A-110, PRO-SW-1DL-100, PRO-R25-SW-DL-100, ENG-MT-SW-ML-A-110, ENG-MT-IR-ML-A-110, PRO-IR-1DL-110, PRO-R25-IR-DL-110, PRO-IR-1DL-100, CO-PW-ML-110, PRO-R25-IR-DL-100, ENG-SH-IR-ML-A-110, ENG-MS-IR-ML-A-110, ENG-MT-IR-ML-A-100, CO-PW-ML-100, MS-CS-IR SS, PRO-R25-SL-DL-100 |
| CO-SL-CL-420 |  | Trench Backfilling and Compaction Works for Street Lighting Network for Alignment-RD-03-1 | 5d | 2027-04-10 | 2027-04-14 | CO-SL-CL-410, CO-SL-LP-570 FF |
|  | DPB | **Distrubution Panel Boards** |  |  |  |  |
|  | TE | **Telecom and Light Current Network** |  | 2027-04-11 | 2027-04-24 |  |
|  | PD | **Ducts Works** |  | 2027-04-15 | 2027-04-24 |  |
| CO-TE-DW-110 |  | Pipes Laying Works for Ducts of Telecom Network for Alignment-RD-03-1 | 4d | 2027-04-15 | 2027-04-19 | ENG-SH-TE-A-110, ENG-MS-TE-A-110, ENG-MT-TE-A-100, PRO-TE-1DL-100, MS-CS-TE SS, MS-MM-130, MS-MM-140, CO-SD-MH-220, CO-SD-ML-130, CO-PW-ML-130, CO-PW-VC-220, CO-PW-FH-160, CON-LV-ML-120, CON-LV-HC-120, CO-EW-200, CO-SL-LP-570, CO-SL-CL-420, PRO-R25-SD-DL-110, PRO-R25-SD-DL-130, PRO-SD-1DL-130, PRO-SD-1DL-120, ENG-MT-SD-CB-A-110, ENG-SH-SD-CB-A-110, ENG-MS-SD-CB-A-110, MS-CS-SD SS, PRO-SW-1DL-110, PRO-R25-SW-DL-110, ENG-MT-SW-ML-A-100, ENG-SH-SW-ML-A-110, MS-CS-SW SS, ENG-MS-SW-ML-A-110, PRO-SW-1DL-100, PRO-R25-SW-DL-100, ENG-MT-SW-ML-A-110, ENG-MT-IR-ML-A-110, PRO-IR-1DL-110, PRO-R25-IR-DL-110, PRO-IR-1DL-100, CO-PW-ML-110, PRO-R25-IR-DL-100, ENG-SH-IR-ML-A-110, ENG-MS-IR-ML-A-110, ENG-MT-IR-ML-A-100, CO-PW-ML-100, MS-CS-IR SS, PRO-R25-SL-DL-160, ENG-MT-SL-DB-A-100, MS-CS-SL SS, PRO-R25-TE-DL-100 |
| CO-TE-DW-130 |  | Trench Backfilling and Compaction Works for Ducts of Telecom Network for Alignment-RD-03-1 | 4d | 2027-04-20 | 2027-04-24 | CO-TE-DW-110, CO-TE-MH-160 FF |
|  | MH | **Manholes Works** |  | 2027-04-11 | 2027-04-17 |  |
| CO-TE-MH-140 |  | Excavation Works for Manholes of Telecom Network for Alignment-RD-03-1 | 2d | 2027-04-11 | 2027-04-12 | ENG-MT-TE-A-100, PRO-TE-1DL-100, CO-SD-MH-220, CO-SD-ML-130, CO-PW-ML-130, CO-PW-VC-220, CO-PW-FH-160, CON-LV-ML-120, CON-LV-HC-120, CO-EW-200, CO-SL-LP-570, PRO-R25-SD-DL-110, PRO-R25-SD-DL-130, PRO-SD-1DL-130, PRO-SD-1DL-120, ENG-MT-SD-CB-A-110, ENG-SH-SD-CB-A-110, ENG-MS-SD-CB-A-110, MS-CS-SD SS, PRO-SW-1DL-110, PRO-R25-SW-DL-110, ENG-MT-SW-ML-A-100, ENG-SH-SW-ML-A-110, MS-CS-SW SS, ENG-MS-SW-ML-A-110, PRO-SW-1DL-100, PRO-R25-SW-DL-100, ENG-MT-SW-ML-A-110, ENG-MT-IR-ML-A-110, PRO-IR-1DL-110, PRO-R25-IR-DL-110, PRO-IR-1DL-100, CO-PW-ML-110, PRO-R25-IR-DL-100, ENG-SH-IR-ML-A-110, ENG-MS-IR-ML-A-110, ENG-MT-IR-ML-A-100, CO-PW-ML-100, MS-CS-IR SS, PRO-R25-SL-DL-160, ENG-MT-SL-DB-A-100, MS-CS-SL SS, MS-CS-TE FF, ENG-SH-TE-A-110, ENG-MS-TE-A-110, ENG-MT-TE-A-110, PRO-TE-1DL-110, MS-CS-TE SS, MS-MM-130, MS-MM-140 |
| CO-TE-MH-150 |  | Installation Works for Manholes of Telecom Network for Alignment-RD-03-1 | 2d | 2027-04-13 | 2027-04-14 | CO-TE-MH-140, PRO-R25-TE-DL-110 |
| CO-TE-MH-160 |  | Backfilling Works for Manholes of Telecom Network for Alignment-RD-03-1 | 2d | 2027-04-15 | 2027-04-17 | CO-TE-MH-150 |
|  | DD | **CCTV, Telephone, MSN, ACs System Works** |  | 2027-04-18 | 2027-04-21 |  |
| CO-TE-CTV-110 |  | Installation of CCTV, Telephone, ACS and MSN Systems Cables for Alignment-RD-03-1 | 4d | 2027-04-18 | 2027-04-21 | CO-TE-MH-160, ENG-SH-MSN-A-120, ENG-SH-CTV-A-110, ENG-MS-CTV-A-110, ENG-MT-CTV-A-100, PRO-CTV-1DL-100, MS-CS-TE SS, MS-MM-130, MS-MM-140, PRO-R25-CTV-DL-100 |
|  | RD | **Road Works** |  | 2027-04-25 | 2027-05-25 |  |
|  | RD | **Pre-Bituminous Construction** |  | 2027-04-25 | 2027-05-10 |  |
| CO-RD-PB-140 |  | Subgrade Layer for Road Works for Alignment-RD-03-1 | 7d | 2027-04-25 | 2027-05-02 | PRO-R25-SD-DL-110, PRO-R25-SD-DL-130, PRO-SD-1DL-130, PRO-SD-1DL-120, ENG-MT-SD-CB-A-110, ENG-SH-SD-CB-A-110, ENG-MS-SD-CB-A-110, MS-CS-SD SS, PRO-SW-1DL-110, PRO-R25-SW-DL-110, ENG-MT-SW-ML-A-100, ENG-SH-SW-ML-A-110, MS-CS-SW SS, ENG-MS-SW-ML-A-110, PRO-SW-1DL-100, PRO-R25-SW-DL-100, ENG-MT-SW-ML-A-110, ENG-MT-IR-ML-A-110, PRO-IR-1DL-110, PRO-R25-IR-DL-110, PRO-IR-1DL-100, CO-PW-ML-110, PRO-R25-IR-DL-100, ENG-SH-IR-ML-A-110, ENG-MS-IR-ML-A-110, ENG-MT-IR-ML-A-100, CO-PW-ML-100, MS-CS-IR SS, CO-EW-200, CO-SD-ML-130, CO-SD-MH-220, CO-PW-ML-130, CO-PW-VC-220, CO-TSE-ML-180, ENG-MS-RD-A-20, ENG-MS-RD-A-30, ENG-MS-RD-A-40, PRO-R25-RD-DL-100, CON-LV-HC-120, CON-LV-ML-120, ENG-MS-RD-A-10, ENG-SH-RD-A-100, ENG-SH-RD-A-110, MS-CS-RD SS, PRO-RD-1DL-100, MS-MM-130, MS-MM-140, CO-TE-DW-130, CO-PW-FH-160, CO-TE-MH-160, CON-LV-DP-120, CO-SL-CL-420, CO-SL-LP-570 |
| CO-RD-PB-150 |  | Aggregate Base Course Layer for Road Works for Alignment-RD-03-1 | 7d | 2027-05-03 | 2027-05-10 | CON-LV-ES-100, CO-RD-PB-140, PRO-R25-RD-DL-110, PRO-RD-1DL-110 |
|  | 1 | **Bituminous Construction** |  | 2027-05-03 | 2027-05-10 |  |
| CO-RD-B-160 |  | Bituminous Base Courses Layers for Road Works for Alignment-RD-03-1 | 2d | 2027-05-03 | 2027-05-04 | PRO-R25-RD-DL-160, PRO-R25-RD-DL-160 FF, CO-RD-PB-150 SS, PRO-RD-1DL-120, PRO-RD-1DL-120 FF, PRO-R25-RD-DL-170, PRO-RD-1DL-130 |
| CON-RD-MR-150 |  | Preparation of Asphaltic Wearing Course Layer for Roads Network for Alignment-RD-03-1 | 2d | 2027-05-09 | 2027-05-10 | PRO-RD-1DL-190, PRO-RD-1DL-190 FF, PRO-RD-DL-210, PRO-RD-DL-210 FF, CO-RD-B-160 SS, CO-RD-B-160, CO-RD-B-160 FF, CO-PW-TF-100, CO-PW-TF-100 FF, CO-PW-TF-110, CO-PW-TF-110 FF, CO-PW-TF-120, CO-PW-TF-120 FF, CO-TE-CTV-TF-140, CO-TE-CTV-TF-140 FF, CO-TE-CTV-TF-330 SS, CO-TE-CTV-TF-330, CO-SD-MH-220, CO-SD-MH-220 FF, PRO-SD-1DL-140, PRO-SD-1DL-140 FF, PRO-R25-SD-DL-140, PRO-R25-SD-DL-140 FF, CO-SD-MH-260, CO-SD-MH-260 FF, PRO-R25-RD-DL-170, PRO-R25-RD-DL-170 FF, PRO-RD-1DL-130, PRO-RD-1DL-130 FF, PRO-R25-RD-DL-100, PRO-R25-RD-DL-100 FF, PRO-RD-1DL-100, PRO-RD-1DL-100 FF, MS-MM-140, MS-MM-140 FF, MS-MM-130, MS-MM-130 FF, MS-CS-RD SS, ENG-SH-RD-A-100, ENG-SH-RD-A-100 FF, ENG-SH-RD-A-110, ENG-SH-RD-A-110 FF, ENG-MS-RD-A-30, ENG-MS-RD-A-30 FF, ENG-MS-RD-A-20, ENG-MS-RD-A-20 FF, ENG-MS-RD-A-10, ENG-MS-RD-A-10 FF, ENG-MS-RD-A-40, ENG-MS-RD-A-40 FF, CO-TE-MH-190, CO-TE-MH-190 FF, CO-TE-DW-160, CO-TE-DW-160 FF, CO-SL-CL-300, CO-SL-CL-300 FF, CO-SL-LP-380, CO-SL-LP-380 FF, CON-LV-HC-150, CON-LV-HC-150 FF, CON-LV-ML-150, CON-LV-ML-150 FF, CO-MV-ML-300, CO-MV-ML-300 FF, CO-IR-ML-180, CO-IR-ML-180 FF, CO-PW-FH-190, CO-PW-FH-190 FF, CO-PW-VC-250, CO-PW-VC-250 FF, CO-PW-ML-160, CO-PW-ML-160 FF, CO-TSE-ML-230, CO-TSE-ML-230 FF, CO-SW-ML-160, CO-SW-ML-160 FF, CO-SW-MH-250, CO-SW-MH-250 FF, CO-SD-CB-200, CO-SD-CB-200 FF, CO-SD-ML-160, CO-SD-ML-160 FF, CO-EW-210_R, CO-EW-210_R FF, CO-SL-LP-520, CO-SL-LP-520 FF, CO-SD-ML-130, CO-SD-ML-130 FF, PRO-R25-SD-DL-110, PRO-R25-SD-DL-110 FF, PRO-R25-SD-DL-130, PRO-R25-SD-DL-130 FF, PRO-SD-1DL-130, PRO-SD-1DL-130 FF, PRO-SD-1DL-120, PRO-SD-1DL-120 FF, ENG-MT-SD-CB-A-110, ENG-MT-SD-CB-A-110 FF, ENG-SH-SD-CB-A-110, ENG-SH-SD-CB-A-110 FF, ENG-MS-SD-CB-A-110, ENG-MS-SD-CB-A-110 FF, MS-CS-SD SS, PRO-SW-1DL-110, PRO-SW-1DL-110 FF, PRO-R25-SW-DL-110, PRO-R25-SW-DL-110 FF, ENG-MT-SW-ML-A-100, ENG-MT-SW-ML-A-100 FF, ENG-SH-SW-ML-A-110, ENG-SH-SW-ML-A-110 FF, MS-CS-SW SS, CO-EW-200, CO-EW-200 FF, ENG-MS-SW-ML-A-110, ENG-MS-SW-ML-A-110 FF, PRO-SW-1DL-100, PRO-SW-1DL-100 FF, PRO-R25-SW-DL-100, PRO-R25-SW-DL-100 FF, ENG-MT-SW-ML-A-110, ENG-MT-SW-ML-A-110 FF, ENG-MT-IR-ML-A-110, ENG-MT-IR-ML-A-110 FF, PRO-IR-1DL-110, PRO-IR-1DL-110 FF, PRO-R25-IR-DL-110, PRO-R25-IR-DL-110 FF, PRO-IR-1DL-100, PRO-IR-1DL-100 FF, CO-PW-ML-110, CO-PW-ML-110 FF, PRO-R25-IR-DL-100, PRO-R25-IR-DL-100 FF, ENG-SH-IR-ML-A-110, ENG-SH-IR-ML-A-110 FF, ENG-MS-IR-ML-A-110, ENG-MS-IR-ML-A-110 FF, ENG-MT-IR-ML-A-100, ENG-MT-IR-ML-A-100 FF, CO-PW-ML-100, CO-PW-ML-100 FF, MS-CS-IR SS, PRO-RD-DL-200, PRO-RD-1DL-180 |
|  | LS | **Pavement Works** |  | 2027-05-05 | 2027-05-25 |  |
| CO-RD-PV-160 |  | Fixing of Curbstone for Sidewalks Pavement for Alignment-RD-03-1 | 5d | 2027-05-05 | 2027-05-10 | ENG-MS-HS-A-10, PRO-R25-RD-DL-130, PRO-RD-1DL-150, CO-RD-B-160 |
| CO-RD-PV-170 |  | Fixing of Interlock Tiles for Sidewalks Pavement for Alignment-RD-03-1 | 8d | 2027-05-11 | 2027-05-25 | CO-RD-PV-160, ENG-MS-HS-A-10, PRO-R25-RD-DL-120, PRO-RD-1DL-140 |
|  | TS | **Traffic Signs Boards and Roads Marking** |  | 2027-05-11 | 2027-05-20 |  |
| CO-RD-F-RM-180 |  | Application of Road Marking Works For Road Works for Alignment-RD-03-1 | 2d | 2027-05-11 | 2027-05-12 | CO-RD-PV-170 SS, ENG-MS-MRK-A-10, PRO-R25-RD-DL-150, ENG-SH-MRK-A-110, PRO-RD-1DL-170, CO-RD-PV-160, CON-RD-MR-150 |
| CO-RD-F-TS-120 |  | Installation Works of Traffic Signs Boards For Road Works for Alignment-RD-03-1 | 2d | 2027-05-13 | 2027-05-20 | CO-RD-F-RM-180, ENG-MS-TSB-A-10, PRO-R25-RD-DL-140, ENG-SH-TSB-A-100, PRO-RD-1DL-160 |
|  | 3 | **Finishes for Infrastructure Networks** |  | 2027-04-18 | 2027-05-29 |  |
|  | 11 | **Storm Drainage Network** |  | 2027-05-08 | 2027-05-13 |  |
|  | TF | **Testing and Finishes** |  | 2027-05-08 | 2027-05-13 |  |
| CO-SD-ML-TF-100 |  | Testing Work for Pipes of Storm Drainage Network for Alignment-RD-03-1 | 3d | 2027-05-08 | 2027-05-10 | CO-SD-MH-220, PRO-SD-1DL-140, PRO-R25-SD-DL-140, CO-SD-MH-260, PRO-R25-RD-DL-170, PRO-RD-1DL-130, PRO-R25-RD-DL-100, PRO-RD-1DL-100, MS-MM-140, MS-MM-130, MS-CS-RD SS, ENG-SH-RD-A-100, ENG-SH-RD-A-110, ENG-MS-RD-A-30, ENG-MS-RD-A-20, ENG-MS-RD-A-10, ENG-MS-RD-A-40, CO-TE-MH-190, CO-TE-DW-160, CO-SL-CL-300, CO-SL-LP-380, CON-LV-HC-150, CON-LV-ML-150, CO-MV-ML-300, CO-IR-ML-180, CO-PW-FH-190, CO-PW-VC-250, CO-PW-ML-160, CO-TSE-ML-230, CO-SW-ML-160, CO-SW-MH-250, CO-SD-CB-200, CO-SD-ML-160, CO-EW-210_R, CO-SL-LP-520, CO-SD-ML-130, CO-SD-PO-110-P1, CO-SD-PO-110-P2 SS |

| ID | WBS | Task | Duration | Start | Finish | Predecessors |
| --- | --- | --- | --- | --- | --- | --- |
| CO-SD-MH-TF-210 |  | Testing Works for Manholes of Storm Drainage Network for Alignment-RD-03-1 | 3d | 2027-05-11 | 2027-05-13 | PRO-SD-1DL-140, PRO-R25-SD-DL-140, CO-SD-MH-260, PRO-R25-RD-DL-170, PRO-RD-1DL-130, PRO-R25-RD-DL-100, PRO-RD-1DL-100, MS-MM-140, MS-MM-130, MS-CS-RD SS, ENG-SH-RD-A-100, ENG-SH-RD-A-110, ENG-MS-RD-A-30, ENG-MS-RD-A-20, ENG-MS-RD-A-10, ENG-MS-RD-A-40, CO-TE-MH-190, CO-TE-DW-160, CO-SL-CL-300, CO-SL-LP-380, CON-LV-HC-150, CON-LV-ML-150, CO-MV-ML-300, CO-IR-ML-180, CO-PW-FH-190, CO-PW-VC-250, CO-PW-ML-160, CO-TSE-ML-230, CO-SW-ML-160, CO-SW-MH-250, CO-SD-CB-200, CO-SD-ML-160, CO-EW-210_R, CO-SL-LP-520, CO-SD-MH-220, CO-SD-ML-TF-100 |
|  | 10 | **Sewage Network** |  |  |  |  |
|  | TF | **Testing and Finishes** |  |  |  |  |
|  | 9 | **Potable Water Network** |  | 2027-05-04 | 2027-05-08 |  |
|  | TF | **Testing and Finishes** |  | 2027-05-04 | 2027-05-08 |  |
| CO-PW-TF-100 |  | Final Finishes works and Covers for Valves and Valve Chambers for Alignment-RD-03-1 | 4d | 2027-05-04 | 2027-05-08 | CO-PW-VC-220, ENG-MT-PW-TF-A-100, PRO-PW-1DL-130, PRO-R25-PW-DL-130, CO-PW-TF-120 SS |
| CO-PW-TF-110 |  | Testing of Potable Water Network for Alignment-RD-03-1 | 2d | 2027-05-04 | 2027-05-05 | CO-PW-ML-130, CO-PW-TF-100 SS |
| CO-PW-TF-120 |  | Fire Hydrant Finishies (S.Box + Safety + Marker Post ) of Potable Water Network for Alignment-RD-03-1 | 3d | 2027-05-04 | 2027-05-06 | PRO-SW-1DL-110, PRO-R25-SW-DL-110, ENG-MT-SW-ML-A-100, ENG-SH-SW-ML-A-110, MS-CS-SW SS, CO-EW-200, MS-MM-130, MS-MM-140, ENG-MS-SW-ML-A-110, CO-SD-MH-220, CO-SD-ML-130, PRO-R25-SD-DL-110, PRO-R25-SD-DL-130, PRO-SD-1DL-130, PRO-SD-1DL-120, ENG-MT-SD-CB-A-110, ENG-SH-SD-CB-A-110, ENG-MS-SD-CB-A-110, MS-CS-SD SS, PRO-SW-1DL-100, PRO-R25-SW-DL-100, ENG-MT-SW-ML-A-110, PRO-SD-1DL-140, PRO-R25-SD-DL-140, CO-SD-MH-260, PRO-R25-RD-DL-170, PRO-RD-1DL-130, PRO-R25-RD-DL-100, PRO-RD-1DL-100, MS-CS-RD SS, ENG-SH-RD-A-100, ENG-SH-RD-A-110, ENG-MS-RD-A-30, ENG-MS-RD-A-20, ENG-MS-RD-A-10, ENG-MS-RD-A-40, CO-TE-MH-190 SS, CO-TE-DW-160 SS, CO-SL-CL-300, CO-SL-LP-380, CON-LV-HC-150, CON-LV-ML-150, CO-MV-ML-300, CO-IR-ML-180, CO-PW-FH-190, CO-PW-VC-250, CO-PW-ML-160, CO-TSE-ML-230, CO-SW-ML-160, CO-SD-CB-200, CO-SD-ML-160, CO-EW-210_R, CO-SL-LP-520, CO-PW-FH-160, ENG-MT-PW-TF-A-100 |
|  | 13 | **Irrigation Network** |  |  |  |  |
|  | TF | **Testing and Finishes** |  |  |  |  |
|  | 1 | **Treated Sewage Effluent (Tse)** |  | 2027-05-29 | 2027-05-29 |  |
|  | TF | **Testing and Finishes** |  | 2027-05-29 | 2027-05-29 |  |
| CO-TSE-TF-170 |  | Final Testing (pressure tests) of Treated Sewage Effluent (Tse) for Alignment-RD-03-1 | 1d | 2027-05-29 | 2027-05-29 | CO-TSE-ML-180, CO-PW-TF-130, CO-TSE-TF-180 |
|  | 6 | **Low Voltage Network** |  | 2027-04-18 | 2027-04-21 |  |
|  | TT | **Termination and Testing Works** |  | 2027-04-18 | 2027-04-21 |  |
| CON-LV-TT-110 |  | Testing and Termination Works for Distribution Pillars Units of Low Voltage Network for Alignment-RD-03-1 | 2d | 2027-04-18 | 2027-04-19 | PRO-LV-TT-1DL-100, PRO-LV-TT-DL-100, CON-LV-DP-120 |
| CON-LV-TT-100 |  | Testing and Termination Works for Substation Low Voltage Panel Boards of Low Voltage Network for Alignment-RD-03-1 | 2d | 2027-04-20 | 2027-04-21 | CON-LV-TT-110, PRO-LV-TT-1DL-100, PRO-LV-TT-DL-100, CON-LV-HC-120, CON-LV-ML-120 |
|  | 1 | **Earthing System Works** |  | 2027-04-20 | 2027-04-21 |  |
| CON-LV-ES-100 |  | Earthing System Works for Distribution Pillars Units of Low Voltage Network for Alignment-RD-03-1 | 2d | 2027-04-20 | 2027-04-21 | CON-LV-TT-110, PRO-LV-DP-1DL-110, PRO-LV-DP-DL-120, CON-LV-DP-120 |
|  | 12 | **Street Lighting Network** |  | 2027-04-27 | 2027-05-22 |  |
|  | TR | **Termination and Testing Works** |  | 2027-04-27 | 2027-05-22 |  |
| CO-SL-LP-580 |  | Installation Works for Lighting Fixtures With Drop Wire of Street Lighting Network for Alignment-RD-03-1 | 6d | 2027-04-27 | 2027-05-03 | PRO-R25-SL-DL-160, CO-SL-CL-420, ENG-MT-SL-DB-A-100, MS-CS-SL SS, MS-MM-130, MS-MM-140, CO-EW-200, ENG-MT-SL-A-120, PRO-R25-SL-DL-140, CO-SL-LP-570, CO-SL-LP-530 |
| CO-SL-TF-570 |  | Testing Works for Lighting Poles of Street Lighting Network for Alignment-RD-03-1 | 6d | 2027-05-10 | 2027-05-22 | PRO-R25-SL-DL-160, CO-SL-LP-570, CO-SL-CL-420, ENG-MT-SL-DB-A-100, MS-CS-SL SS, MS-MM-130, MS-MM-140, CO-EW-200, CO-SL-LP-580, CO-SL-ES-330, PRO-R25-SL-DL-130, CO-SL-TF-530 |
|  | ES | **Earthing System Works** |  | 2027-05-04 | 2027-05-09 |  |
| CO-SL-ES-320 |  | Install Earthing System Works for Lighting Poles of Street Lighting Network for Alignment-RD-03-1 | 3d | 2027-05-04 | 2027-05-06 | CO-SL-LP-580, ENG-MT-SL-ES-A-100, PRO-R25-SL-DL-150 |
| CO-SL-ES-330 |  | Install Earthing System Works for Lighting Panel Boards of Street Lighting Network for Alignment-RD-03-1 | 2d | 2027-05-08 | 2027-05-09 | CO-SL-ES-320, PRO-R25-SL-DL-150 |
|  | 3 | **Telecom and Light Current Network** |  | 2027-04-22 | 2027-04-28 |  |
|  | 1 | **Testing and Finishes** |  | 2027-04-22 | 2027-04-28 |  |
| CO-TE-CTV-TF-140 |  | Testing and Interface modules with Telecom for Alignment-RD-03-1 | 6d | 2027-04-22 | 2027-04-28 | CO-TE-CTV-110 |
| CO-TE-CTV-TF-330 |  | Testing and Interface modules with CCTV, Telephone, MSN and Access Control for Alignment-RD-03-1 | 6d | 2027-04-22 | 2027-04-28 | CO-TE-CTV-110, CO-TE-CTV-TF-140 SS |
|  | 2 | **Alignment-RD-03-2** |  | 2026-11-04 | 2027-06-24 |  |
|  | EW | **Earthworks** |  | 2026-11-04 | 2026-11-17 |  |
|  | EW | **Earthworks** |  | 2026-11-04 | 2026-11-17 |  |
| CO-EW-240 |  | Excavation and Backfilling Works Upto Design Level for Earthworks for Alignment-RD-03-2 | 12d | 2026-11-04 | 2026-11-17 | CO-EW-210, CO-EW-210_R, MS-CS-PS SS, MOB-30, MOB-20, MOB-80, MOB-40, MOB-50, MOB-60, MOB-10, MOB-70, PRE-CON-MDC-10, PRE-CON-MDC-20, PRE-CON-MDC-30, PRE-CON-MDC-40, PRE-CON-MDC-50, PRE-CON-MDC-60, PRE-CON-MDC-70, PRE-CON-MDC-80, MS-MM-100, MS-MM-130, MS-MM-140, MS-MM-150 |
|  | SD | **Storm Drainage Network** |  | 2026-12-24 | 2027-02-16 |  |
|  | MH | **Manholes** |  | 2026-12-24 | 2027-02-03 |  |
| CO-SD-MH-350 |  | Trench Excavation and Bedding Works for Manholes of Storm Drainage Network for Alignment-RD-03-2 | 10d | 2026-12-24 | 2027-01-04 | CO-SD-ML-130, ENG-MT-SD-ML-A-100, MS-CS-SD SS, CO-EW-240, ENG-MS-SD-ML-A-110, ENG-MT-SD-ML-A-110, ENG-SH-SD-ML-A-110, MS-MM-130, MS-MM-140, CO-SD-MH-230 |
| CO-SD-MH-360 |  | Install RC Footing Works for Manholes of Storm Drainage Network for Alignment-RD-03-2 | 9d | 2027-01-05 | 2027-01-14 | CO-SD-MH-350, PRO-R25-SD-DL-100 FF, PRO-SD-1DL-100, CO-SD-MH-240 |
| CO-SD-MH-370 |  | Install RC Wall Rings & Slab Works for Manholes of Storm Drainage Network for Alignment-RD-03-2 | 10d | 2027-01-16 | 2027-01-26 | CO-SD-MH-360, PRO-SD-1DL-100, CO-SD-MH-250 |
| CO-SD-MH-380 |  | Backfilling Works for Manholes of Storm Drainage Network for Alignment-RD-03-2 | 7d | 2027-01-27 | 2027-02-03 | CO-SD-MH-370, CO-SD-MH-260 |
|  | ML | **Main Line Sections** |  | 2027-01-27 | 2027-02-16 |  |
| CO-SD-ML-230 |  | Trench Excavation and Bedding Works for Main Lines of Storm Drainage Network for Alignment-RD-03-2 | 7d | 2027-01-27 | 2027-02-03 | CO-EW-240, ENG-SH-SD-ML-A-110, ENG-MS-SD-ML-A-110, ENG-MT-SD-ML-A-110, MS-CS-SD SS, MS-MM-130, MS-MM-140, CO-SD-MH-370, CO-SD-MH-350 SS, CO-SD-MH-350 FF, CO-SD-ML-140 |
| CO-SD-ML-240 |  | Pipes Laying Works for Main Lines of Storm Drainage Network for Alignment-RD-03-2 | 5d | 2027-02-04 | 2027-02-09 | CO-SD-ML-230, PRO-R25-SD-DL-120 FF, PRO-SD-1DL-110, CO-SD-MH-370, CO-SD-ML-150 SS |
| CO-SD-ML-250 |  | Trench Backfilling and Compaction Works for Main Lines of Storm Drainage Network for Alignment-RD-03-2 | 6d | 2027-02-10 | 2027-02-16 | CO-SD-ML-240, CO-SD-ML-160 SS, CO-SD-MH-380 FF |
|  | CB | **Catch Basin Sections** |  |  |  |  |
|  | SW | **Sewage Network** |  |  |  |  |
|  | 1 | **Manholes** |  |  |  |  |
|  | ML | **Main Line Sections** |  |  |  |  |
|  | IR | **Irrigation Network** |  |  |  |  |
|  | ML | **Main Line Pipes** |  |  |  |  |
|  | MV | **Medium Voltage Network** |  | 2027-03-17 | 2027-04-04 |  |
|  | CW | **Cabling Works** |  | 2027-03-17 | 2027-04-04 |  |
| CO-MV-ML-370 |  | Trench Excavation and Bedding Works for Medium Voltage Network for Alignment-RD-03-2 | 5d | 2027-03-17 | 2027-03-22 | CO-SD-CB-200, PRO-R25-SD-DL-110, PRO-R25-SD-DL-130, PRO-SD-1DL-130, PRO-SD-1DL-120, CO-SD-CB-190, ENG-MT-SD-CB-A-110, ENG-SH-SD-CB-A-110, ENG-MS-SD-CB-A-110, MS-CS-SD SS, CO-SD-CB-180, CO-SW-MH-250, CO-SW-MH-240, CO-SW-MH-230, PRO-SW-1DL-110, PRO-R25-SW-DL-110, CO-SW-MH-220, ENG-MT-SW-ML-A-100, ENG-SH-SW-ML-A-110, MS-CS-SW SS, ENG-MS-SW-ML-A-110, CO-SW-MH-210, CO-SW-ML-160, PRO-SW-1DL-100, PRO-R25-SW-DL-100, CO-SW-ML-150, ENG-MT-SW-ML-A-110, CO-SW-ML-140, ENG-SH-MV-A-110, ENG-MS-MV-A-110, MS-CS-MV SS, CO-SD-ML-250, CO-SD-MH-380, CO-EW-240, MS-MM-130, MS-MM-140, CO-MV-ML-280 |
| CO-MV-ML-380 |  | Duct Laying Works for Medium Voltage Network for Alignment-RD-03-2 | 5d | 2027-03-24 | 2027-03-29 | CO-MV-ML-370, PRO-MV-DL-100, PRO-MV-1DL-100, CO-MV-ML-290 |
| CO-MV-ML-390 |  | Trench Backfilling and Compaction Works for Medium Voltage Network for Alignment-RD-03-2 | 4d | 2027-03-31 | 2027-04-04 | CO-MV-ML-380, CO-MV-ML-300 |
|  | LV | **Low Voltage Network** |  | 2027-04-07 | 2027-05-11 |  |
|  | MLVC | **Main Low Voltage Cables Works ( Cable 300 MM )** |  | 2027-04-07 | 2027-05-01 |  |
| CON-LV-ML-220 |  | Trench Excavation and Bedding Works for Main Cable of Low Voltage Network for Alignment-RD-03-2 | 6d | 2027-04-07 | 2027-04-13 | CO-SD-CB-200, PRO-R25-SD-DL-110, PRO-R25-SD-DL-130, PRO-SD-1DL-130, PRO-SD-1DL-120, CO-SD-CB-190, ENG-MT-SD-CB-A-110, ENG-SH-SD-CB-A-110, ENG-MS-SD-CB-A-110, MS-CS-SD SS, CO-SD-ML-250, CO-SD-CB-180, CO-SW-ML-160, CO-SW-MH-250, CO-SW-MH-240, CO-SW-MH-230, PRO-SW-1DL-110, PRO-R25-SW-DL-110, CO-SW-MH-220, ENG-MT-SW-ML-A-100, ENG-SH-SW-ML-A-110, MS-CS-SW SS, ENG-MS-SW-ML-A-110, CO-SD-MH-380, CO-SW-MH-210, PRO-SW-1DL-100, PRO-R25-SW-DL-100, CO-SW-ML-150, ENG-MT-SW-ML-A-110, CO-SW-ML-140, ENG-SH-LV-A-120, ENG-MS-MV-A-120, MS-CS-LV SS, CO-MV-ML-390, CO-EW-240, MS-MM-130, MS-MM-140, CON-LV-ML-130 |
| CON-LV-ML-230 |  | Cable Laying Works for Main Cable of Low Voltage Network for Alignment-RD-03-2 | 9d | 2027-04-14 | 2027-04-24 | CON-LV-ML-220, PRO-LV-ML-1DL-100, PRO-LV-ML-DL-100, CON-LV-ML-140 |
| CON-LV-ML-240 |  | Trench Backfilling and Compaction Works for Main Cable of Low Voltage Network for Alignment-RD-03-2 | 6d | 2027-04-25 | 2027-05-01 | CON-LV-ML-230, CON-LV-ML-150 |
|  | SLVC | **Service Low Voltage Cables Works ( Cable 70 MM )** |  | 2027-04-14 | 2027-05-11 |  |
| CON-LV-HC-220 |  | Trench Excavation and Bedding Works for Service Cable of Low Voltage Network for Alignment-RD-03-2 | 5d | 2027-04-14 | 2027-04-19 | CO-SD-CB-200, PRO-R25-SD-DL-110, PRO-R25-SD-DL-130, PRO-SD-1DL-130, PRO-SD-1DL-120, CO-SD-CB-190, ENG-MT-SD-CB-A-110, ENG-SH-SD-CB-A-110, ENG-MS-SD-CB-A-110, MS-CS-SD SS, CO-SD-CB-180, CO-SW-MH-250, CO-SW-MH-240, CO-SW-MH-230, PRO-SW-1DL-110, PRO-R25-SW-DL-110, CO-SW-MH-220, ENG-MT-SW-ML-A-100, ENG-SH-SW-ML-A-110, MS-CS-SW SS, ENG-MS-SW-ML-A-110, CO-SW-MH-210, CO-SW-ML-160, PRO-SW-1DL-100, PRO-R25-SW-DL-100, CO-SW-ML-150, ENG-MT-SW-ML-A-110, CO-SW-ML-140, CON-LV-ML-220, ENG-MS-MV-A-120, MS-CS-LV SS, CO-EW-240, ENG-SH-LV-A-120, MS-MM-130, MS-MM-140, CO-SD-ML-250, CO-SD-MH-380, CON-LV-HC-130 |
| CON-LV-HC-230 |  | Cable Laying Works for Service Cable of Low Voltage Network for Alignment-RD-03-2 | 9d | 2027-04-25 | 2027-05-04 | CON-LV-HC-220, CON-LV-ML-230, PRO-LV-HC-1DL-100, PRO-LV-HC-DL-100, CON-LV-HC-140 |
| CON-LV-HC-240 |  | Trench Backfilling and Compaction Works for Service Cable of Low Voltage Network for Alignment-RD-03-2 | 6d | 2027-05-05 | 2027-05-11 | CON-LV-HC-230, CON-LV-ML-240, CON-LV-HC-150 |
|  | DP | **Distribution Pillars Works** |  | 2027-04-15 | 2027-04-27 |  |
| CON-LV-DP-220 |  | Foundation Excavation Works for Distribution Pillars of Low Voltage Network for Alignment-RD-03-2 | 7d | 2027-04-15 | 2027-04-22 | CON-LV-ML-220, ENG-MS-MV-A-120, MS-CS-LV SS, CO-EW-240, MS-MM-130, MS-MM-140, CON-LV-DP-130 |
| CON-LV-DP-230 |  | Pouring Plain Concrete For Distribution Pillar Units of Low Voltage Network for Alignment-RD-03-2 | 2d | 2027-04-24 | 2027-04-25 | CON-LV-DP-220, CON-LV-DP-130 |
| CON-LV-DP-240 |  | Installation Works for Distribution Pillar Units of Low Voltage Network for Alignment-RD-03-2 | 2d | 2027-04-26 | 2027-04-27 | CON-LV-DP-230, PRO-LV-DP-1DL-100, PRO-LV-DP-DL-100, CON-LV-DP-130 |
|  | SL | **Street Lighting Network** |  | 2027-03-23 | 2027-04-15 |  |
|  | LP | **Lighting Poles Works** |  | 2027-03-23 | 2027-04-10 |  |

| ID | WBS | Task | Duration | Start | Finish | Predecessors |
| --- | --- | --- | --- | --- | --- | --- |
| CO-SL-LP-500 |  | Installation Works for Lighting Poles Foundation of Street Lighting Network for Alignment-RD-03-2 | 5d | 2027-03-23 | 2027-03-28 | ENG-SH-SL-A-110, ENG-MS-SL-A-110, ENG-MT-SL-A-100, MS-CS-SL SS, MS-MM-130, MS-MM-140, CO-EW-240, CO-MV-ML-370, PRO-R25-SL-DL-110 |
| CO-SL-LP-510 |  | Installation Works for Lighting Poles of Street Lighting Network for Alignment-RD-03-2 | 5d | 2027-03-29 | 2027-04-03 | CO-SL-LP-500, ENG-MT-SL-A-110, PRO-R25-SL-DL-120 |
| CO-SL-LP-520 |  | Backfilling Works for Lighting Poles of Street Lighting Network for Alignment-RD-03-2 | 6d | 2027-04-04 | 2027-04-10 | CO-SL-LP-510 |
|  | CW | **Cabling Works** |  | 2027-04-05 | 2027-04-15 |  |
| CO-SL-CL-380 |  | Cable Laying Works for Street Lighting Network for Alignment-RD-03-2 | 5d | 2027-04-05 | 2027-04-10 | ENG-SH-SL-A-110, ENG-MS-SL-A-110, ENG-MT-SL-ML-A-100, PRO-SL-1DL-100, MS-CS-SL SS, MS-MM-130, MS-MM-140, CO-SL-LP-510, CO-PW-ML-160, CO-PW-FH-190, CO-EW-240, CO-MV-ML-390, CO-SD-ML-250, CO-SD-MH-380, CO-SD-CB-200, PRO-R25-SD-DL-110, PRO-R25-SD-DL-130, PRO-SD-1DL-130, PRO-SD-1DL-120, CO-SD-CB-190, ENG-MT-SD-CB-A-110, ENG-SH-SD-CB-A-110, ENG-MS-SD-CB-A-110, MS-CS-SD SS, CO-SD-CB-180, CO-SW-MH-250, CO-SW-MH-240, CO-SW-MH-230, PRO-SW-1DL-110, PRO-R25-SW-DL-110, CO-SW-MH-220, ENG-MT-SW-ML-A-100, ENG-SH-SW-ML-A-110, MS-CS-SW SS, ENG-MS-SW-ML-A-110, CO-SW-MH-210, CO-SW-ML-160, PRO-SW-1DL-100, PRO-R25-SW-DL-100, CO-SW-ML-150, ENG-MT-SW-ML-A-110, CO-SW-ML-140, CO-IR-ML-180, CO-IR-ML-190, ENG-MT-IR-ML-A-110, PRO-IR-1DL-110, PRO-R25-IR-DL-110, CO-IR-ML-170, PRO-IR-1DL-100, PRO-R25-IR-DL-100, CO-IR-ML-160, ENG-SH-IR-ML-A-110, ENG-MS-IR-ML-A-110, ENG-MT-IR-ML-A-100, MS-CS-IR SS, CO-IR-ML-150, PRO-R25-SL-DL-100 |
| CO-SL-CL-390 |  | Trench Backfilling and Compaction Works for Street Lighting Network for Alignment-RD-03-2 | 5d | 2027-04-11 | 2027-04-15 | CO-SL-CL-380, CO-SL-LP-520 FF |
|  | DPB | **Distrubution Panel Boards** |  |  |  |  |
|  | TE | **Telecom and Light Current Network** |  | 2027-05-12 | 2027-05-20 |  |
|  | PD | **Ducts Works** |  |  |  |  |
|  | MH | **Manholes Works** |  |  |  |  |
|  | DD | **CCTV, Telephone, MSN, ACs System Works** |  | 2027-05-12 | 2027-05-20 |  |
| CO-TE-CTV-240 |  | Installation of CCTV, Telephone, ACS and MSN Systems Cables for Alignment-RD-03-2 | 3d | 2027-05-12 | 2027-05-20 | ENG-SH-MSN-A-120, ENG-SH-CTV-A-110, ENG-MS-CTV-A-110, ENG-MT-CTV-A-100, PRO-CTV-1DL-100, MS-CS-TE SS, MS-MM-130, MS-MM-140, CO-TE-MH-190, PRO-R25-TE-DL-110, CO-TE-MH-180, ENG-SH-TE-A-110, ENG-MS-TE-A-110, ENG-MT-TE-A-110, PRO-TE-1DL-110, CO-TE-MH-170, ENG-MT-TE-A-100, PRO-TE-1DL-100, CO-SD-MH-380, CO-SD-ML-250, CO-MV-ML-390, CON-LV-ML-240, CON-LV-HC-240, CO-EW-240, CON-LV-DP-240, CO-SL-LP-520, CO-SL-CL-390, CO-SD-MH-260, CO-SD-ML-160, CO-SD-CB-200, CO-SW-MH-250, CO-SW-ML-160, CO-PW-ML-160, CO-PW-VC-250, CO-PW-FH-190, CO-IR-ML-180, CO-MV-ML-300, CON-LV-ML-150, CON-LV-HC-150, CO-SL-LP-380, CO-SL-CL-300, CO-EW-210_R, PRO-LV-DP-1DL-100, PRO-LV-DP-DL-100, CON-LV-DP-130, PRO-R25-SL-DL-160 SS, ENG-MT-SL-DB-A-100, MS-CS-SL SS, PRO-R25-SD-DL-110, PRO-R25-SD-DL-130, PRO-SD-1DL-130, PRO-SD-1DL-120, CO-SD-CB-190, ENG-MT-SD-CB-A-110, ENG-SH-SD-CB-A-110, ENG-MS-SD-CB-A-110, MS-CS-SD SS, CO-SD-CB-180, CO-SW-MH-240, CO-SW-MH-230, PRO-SW-1DL-110, PRO-R25-SW-DL-110, CO-SW-MH-220, ENG-MT-SW-ML-A-100, ENG-SH-SW-ML-A-110, MS-CS-SW SS, ENG-MS-SW-ML-A-110, CO-SW-MH-210, PRO-SW-1DL-100, PRO-R25-SW-DL-100, CO-SW-ML-150, ENG-MT-SW-ML-A-110, CO-SW-ML-140, CO-IR-ML-190, ENG-MT-IR-ML-A-110, PRO-IR-1DL-110, PRO-R25-IR-DL-110, CO-IR-ML-170, PRO-IR-1DL-100, PRO-R25-IR-DL-100, CO-IR-ML-160, ENG-SH-IR-ML-A-110, ENG-MS-IR-ML-A-110, ENG-MT-IR-ML-A-100, MS-CS-IR SS, CO-IR-ML-150, CO-SL-LP-370, PRO-R25-SL-DL-160, PRO-R25-CTV-DL-100, CO-TE-CTV-150 |
|  | RD | **Road Works** |  | 2027-05-12 | 2027-06-24 |  |
|  | RD | **Pre-Bituminous Construction** |  | 2027-05-12 | 2027-05-29 |  |
| CO-RD-PB-220 |  | Subgrade Layer for Road Works for Alignment-RD-03-2 | 5d | 2027-05-12 | 2027-05-23 | CO-SD-CB-200, PRO-R25-SD-DL-110, PRO-R25-SD-DL-130, PRO-SD-1DL-130, PRO-SD-1DL-120, CO-SD-CB-190, ENG-MT-SD-CB-A-110, ENG-SH-SD-CB-A-110, ENG-MS-SD-CB-A-110, MS-CS-SD SS, CO-SD-CB-180, CO-SW-MH-250, CO-SW-MH-240, CO-SW-MH-230, PRO-SW-1DL-110, PRO-R25-SW-DL-110, CO-SW-MH-220, ENG-MT-SW-ML-A-100, ENG-SH-SW-ML-A-110, MS-CS-SW SS, ENG-MS-SW-ML-A-110, CO-SW-MH-210, CO-SW-ML-160, PRO-SW-1DL-100, PRO-R25-SW-DL-100, CO-SW-ML-150, ENG-MT-SW-ML-A-110, CO-SW-ML-140, CO-IR-ML-180, CO-IR-ML-190, ENG-MT-IR-ML-A-110, PRO-IR-1DL-110, PRO-R25-IR-DL-110, CO-IR-ML-170, PRO-IR-1DL-100, PRO-R25-IR-DL-100, CO-IR-ML-160, ENG-SH-IR-ML-A-110, ENG-MS-IR-ML-A-110, ENG-MT-IR-ML-A-100, MS-CS-IR SS, CO-IR-ML-150, CO-TE-DW-160, CO-TE-DW-150, PRO-R25-TE-DL-100, ENG-SH-TE-A-110, ENG-MS-TE-A-110, ENG-MT-TE-A-100, PRO-TE-1DL-100, MS-CS-TE SS, CO-SL-LP-520, CO-SD-MH-260, CO-SD-ML-160, CO-PW-ML-160, CO-PW-VC-250, CO-PW-FH-190, CO-MV-ML-300, CON-LV-ML-150, CON-LV-HC-150, CO-SL-LP-380, CO-SL-CL-300, CO-EW-210_R, PRO-LV-DP-1DL-100, PRO-LV-DP-DL-100, CON-LV-DP-130, PRO-R25-SL-DL-160 SS, ENG-MT-SL-DB-A-100, MS-CS-SL SS, CO-SL-LP-370, PRO-R25-SL-DL-160, CO-TE-MH-190, PRO-R25-TE-DL-110, CO-TE-MH-180, ENG-MT-TE-A-110, PRO-TE-1DL-110, CO-TE-MH-170, CO-EW-240, CO-SD-ML-250, CO-SD-MH-380, CO-MV-ML-390, ENG-MS-RD-A-20, ENG-MS-RD-A-30, ENG-MS-RD-A-40, PRO-R25-RD-DL-100, CON-LV-HC-240, CON-LV-ML-240, ENG-MS-RD-A-10, ENG-SH-RD-A-100, ENG-SH-RD-A-110, MS-CS-RD SS, PRO-RD-1DL-100, MS-MM-130, MS-MM-140, CON-LV-DP-240, CO-SL-CL-390, CO-SL-TF-530 |
| CO-RD-PB-230 |  | Installation of Aggregate Base Course Layer and Interlock Works for Road Works for Alignment-RD-03-2 | 5d | 2027-05-24 | 2027-05-29 | CO-RD-PB-220, PRO-R25-RD-DL-110, PRO-RD-1DL-110 |
|  | 1 | **Bituminous Construction** |  | 2027-05-30 | 2027-06-15 |  |
| CO-RD-B-240 |  | Bituminous Base Courses Layers for Road Works for Alignment-RD-03-2 | 3d | 2027-05-30 | 2027-06-01 | PRO-R25-RD-DL-160, PRO-R25-RD-DL-160 FF, CO-RD-PB-230 SS, CO-RD-PB-230, CO-RD-PB-230 FF, PRO-RD-1DL-120, PRO-RD-1DL-120 FF, PRO-R25-RD-DL-100 FF, PRO-RD-1DL-100 FF, MS-MM-140 FF, MS-MM-130 FF, ENG-SH-RD-A-100 FF, ENG-SH-RD-A-110 FF, ENG-MS-RD-A-30 FF, ENG-MS-RD-A-20 FF, ENG-MS-RD-A-10 FF, ENG-MS-RD-A-40 FF, CO-TE-MH-190 FF, CO-TE-DW-160 FF, CO-SL-CL-300 FF, CO-SL-LP-380 FF, CON-LV-HC-150 FF, CON-LV-ML-150 FF, CO-MV-ML-300 FF, CO-IR-ML-180 FF, CO-PW-FH-190 FF, CO-PW-VC-250 FF, CO-PW-ML-160 FF, CO-TSE-ML-230 FF, CO-SW-ML-160 FF, CO-SW-MH-250 FF, CO-SD-CB-200 FF, CO-SD-ML-160 FF, CO-SD-MH-260 FF, CO-EW-210_R FF, CO-SL-LP-520 FF, PRO-R25-RD-DL-170, PRO-RD-1DL-130, PRO-R25-RD-DL-100, PRO-RD-1DL-100, MS-MM-140, MS-MM-130, MS-CS-RD SS, ENG-SH-RD-A-100, ENG-SH-RD-A-110, ENG-MS-RD-A-30, ENG-MS-RD-A-20, ENG-MS-RD-A-10, ENG-MS-RD-A-40, CO-TE-MH-190, CO-TE-DW-160, CO-SL-CL-300, CO-SL-LP-380, CON-LV-HC-150, CON-LV-ML-150, CO-MV-ML-300, CO-IR-ML-180, CO-PW-FH-190, CO-PW-VC-250, CO-PW-ML-160, CO-TSE-ML-230, CO-SW-ML-160, CO-SW-MH-250, CO-SD-CB-200, CO-SD-ML-160, CO-SD-MH-260, CO-EW-210_R, CO-SL-LP-520 |
| CON-RD-MR-230 |  | Preparation of Asphaltic Wearing Course Layer for Roads Network for Alignment-RD-03-2 | 3d | 2027-06-13 | 2027-06-15 | PRO-RD-1DL-190, PRO-RD-1DL-190 FF, PRO-RD-DL-210, PRO-RD-DL-210 FF, CO-RD-B-240 SS, CO-RD-B-240, CO-RD-B-240 FF, CO-SD-CB-TF-260, CO-SD-CB-TF-260 FF, CO-SD-MH-TF-290, CO-SD-MH-TF-290 FF, CO-TE-CTV-TF-320, CO-TE-CTV-TF-320 FF, CO-SD-MH-380, CO-SD-MH-380 FF, PRO-SD-1DL-140, PRO-SD-1DL-140 FF, PRO-R25-SD-DL-140, PRO-R25-SD-DL-140 FF, CO-SD-MH-260, CO-SD-MH-260 FF, PRO-R25-RD-DL-170, PRO-R25-RD-DL-170 FF, PRO-RD-1DL-130, PRO-RD-1DL-130 FF, PRO-R25-RD-DL-100, PRO-R25-RD-DL-100 FF, PRO-RD-1DL-100, PRO-RD-1DL-100 FF, MS-MM-140, MS-MM-140 FF, MS-MM-130, MS-MM-130 FF, MS-CS-RD SS, ENG-SH-RD-A-100, ENG-SH-RD-A-100 FF, ENG-SH-RD-A-110, ENG-SH-RD-A-110 FF, ENG-MS-RD-A-30, ENG-MS-RD-A-30 FF, ENG-MS-RD-A-20, ENG-MS-RD-A-20 FF, ENG-MS-RD-A-10, ENG-MS-RD-A-10 FF, ENG-MS-RD-A-40, ENG-MS-RD-A-40 FF, CO-TE-MH-190, CO-TE-MH-190 FF, CO-TE-DW-160, CO-TE-DW-160 FF, CO-SL-CL-300, CO-SL-CL-300 FF, CO-SL-LP-380, CO-SL-LP-380 FF, CON-LV-HC-150, CON-LV-HC-150 FF, CON-LV-ML-150, CON-LV-ML-150 FF, CO-MV-ML-300, CO-MV-ML-300 FF, CO-IR-ML-180, CO-IR-ML-180 FF, CO-PW-FH-190, CO-PW-FH-190 FF, CO-PW-VC-250, CO-PW-VC-250 FF, CO-PW-ML-160, CO-PW-ML-160 FF, CO-TSE-ML-230, CO-TSE-ML-230 FF, CO-SW-ML-160, CO-SW-ML-160 FF, CO-SW-MH-250, CO-SW-MH-250 FF, CO-SD-CB-200, CO-SD-CB-200 FF, CO-SD-ML-160, CO-SD-ML-160 FF, CO-EW-210_R, CO-EW-210_R FF, CO-SL-LP-520, CO-SL-LP-520 FF, CO-SD-CB-TF-190, CO-SD-CB-TF-190 FF, PRO-R25-SD-DL-110, PRO-R25-SD-DL-110 FF, PRO-R25-SD-DL-130, PRO-R25-SD-DL-130 FF, PRO-SD-1DL-130, PRO-SD-1DL-130 FF, PRO-SD-1DL-120, PRO-SD-1DL-120 FF, CO-SD-CB-190, CO-SD-CB-190 FF, ENG-MT-SD-CB-A-110, ENG-MT-SD-CB-A-110 FF, ENG-SH-SD-CB-A-110, ENG-SH-SD-CB-A-110 FF, ENG-MS-SD-CB-A-110, ENG-MS-SD-CB-A-110 FF, MS-CS-SD SS, CO-SD-ML-250, CO-SD-ML-250 FF, CO-SD-CB-180, CO-SD-CB-180 FF, CO-SD-PO-110-P1, CO-SD-PO-110-P1 FF, CO-SD-PO-110-P2, CO-SD-PO-110-P2 FF, CO-SD-ML-TF-110, CO-SD-ML-TF-110 FF, CO-SW-MH-240, CO-SW-MH-240 FF, CO-SW-MH-230, CO-SW-MH-230 FF, PRO-SW-1DL-110, PRO-SW-1DL-110 FF, PRO-R25-SW-DL-110, PRO-R25-SW-DL-110 FF, CO-SW-MH-220, CO-SW-MH-220 FF, ENG-MT-SW-ML-A-100, ENG-MT-SW-ML-A-100 FF, ENG-SH-SW-ML-A-110, ENG-SH-SW-ML-A-110 FF, MS-CS-SW SS, CO-EW-240, CO-EW-240 FF, ENG-MS-SW-ML-A-110, ENG-MS-SW-ML-A-110 FF, CO-SW-MH-210, CO-SW-MH-210 FF, PRO-SW-1DL-100, PRO-SW-1DL-100 FF, PRO-R25-SW-DL-100, PRO-R25-SW-DL-100 FF, CO-SW-ML-150, CO-SW-ML-150 FF, ENG-MT-SW-ML-A-110, ENG-MT-SW-ML-A-110 FF, CO-SW-ML-140, CO-SW-ML-140 FF, CO-SW-TF-230, CO-SW-TF-230 FF, CO-SW-TF-250, CO-SW-TF-250 FF, CO-IR-TF-170, CO-IR-TF-170 FF, CO-IR-ML-190, CO-IR-ML-190 FF, ENG-MT-IR-ML-A-110, ENG-MT-IR-ML-A-110 FF, PRO-IR-1DL-110, PRO-IR-1DL-110 FF, PRO-R25-IR-DL-110, PRO-R25-IR-DL-110 FF, CO-IR-ML-170, CO-IR-ML-170 FF, PRO-IR-1DL-100, PRO-IR-1DL-100 FF, PRO-R25-IR-DL-100, PRO-R25-IR-DL-100 FF, CO-IR-ML-160, CO-IR-ML-160 FF, ENG-SH-IR-ML-A-110, ENG-SH-IR-ML-A-110 FF, ENG-MS-IR-ML-A-110, ENG-MS-IR-ML-A-110 FF, ENG-MT-IR-ML-A-100, ENG-MT-IR-ML-A-100 FF, MS-CS-IR SS, CO-IR-ML-150, CO-IR-ML-150 FF, CO-TE-CTV-TF-180, CO-TE-CTV-TF-180 FF, CO-TE-CTV-TF-310, CO-TE-CTV-TF-310 FF, CO-TE-CTV-240, CO-TE-CTV-240 FF, CO-TE-CTV-150 SS, PRO-RD-DL-200, PRO-RD-1DL-180 |
|  | LS | **Pavement Works** |  | 2027-06-02 | 2027-06-17 |  |
| CO-RD-PV-240 |  | Fixing of Curbstone for Sidewalks Pavement for Alignment-RD-03-2 | 7d | 2027-06-02 | 2027-06-09 | ENG-MS-HS-A-10, PRO-R25-RD-DL-130, PRO-RD-1DL-150, CO-RD-B-240, CO-RD-PV-180 |
| CO-RD-PV-250 |  | Fixing of Interlock Tiles for Sidewalks Pavement for Alignment-RD-03-2 | 7d | 2027-06-10 | 2027-06-17 | ENG-MS-HS-A-10, PRO-R25-RD-DL-120, PRO-RD-1DL-140, CO-RD-PV-240, CO-RD-PV-190 |
|  | TS | **Traffic Signs Boards and Roads Marking** |  | 2027-06-19 | 2027-06-24 |  |
| CO-RD-F-RM-220 |  | Application of Road Marking Works For Road Works for Alignment-RD-03-2 | 3d | 2027-06-19 | 2027-06-21 | CO-RD-PV-250, ENG-MS-MRK-A-10, PRO-R25-RD-DL-150, ENG-SH-MRK-A-110, PRO-RD-1DL-170, CO-RD-PV-240, CON-RD-MR-230, CO-RD-F-RM-190 |
| CO-RD-F-TS-160 |  | Installation Works of Traffic Signs Boards For Road Works for Alignment-RD-03-2 | 3d | 2027-06-22 | 2027-06-24 | CO-RD-F-RM-220, ENG-MS-TSB-A-10, PRO-R25-RD-DL-140, ENG-SH-TSB-A-100, PRO-RD-1DL-160, CO-RD-F-TS-130 |
|  | 3 | **Finishes for Infrastructure Networks** |  | 2027-04-05 | 2027-06-12 |  |
|  | 11 | **Storm Drainage Network** |  | 2027-05-25 | 2027-06-12 |  |
|  | TF | **Testing and Finishes** |  | 2027-05-25 | 2027-06-12 |  |
| CO-SD-MH-TF-290 |  | Testing Works for Manholes of Storm Drainage Network for Alignment-RD-03-2 | 6d | 2027-05-25 | 2027-05-31 | PRO-SD-1DL-140, PRO-R25-SD-DL-140, CO-SD-MH-260, PRO-R25-RD-DL-170, PRO-RD-1DL-130, PRO-R25-RD-DL-100, PRO-RD-1DL-100, MS-MM-140, MS-MM-130, MS-CS-RD SS, ENG-SH-RD-A-100, ENG-SH-RD-A-110, ENG-MS-RD-A-30, ENG-MS-RD-A-20, ENG-MS-RD-A-10, ENG-MS-RD-A-40, CO-TE-MH-190, CO-TE-DW-160, CO-SL-CL-300, CO-SL-LP-380, CON-LV-HC-150, CON-LV-ML-150, CO-MV-ML-300, CO-IR-ML-180, CO-PW-FH-190, CO-PW-VC-250, CO-PW-ML-160, CO-TSE-ML-230, CO-SW-ML-160, CO-SW-MH-250, CO-SD-CB-200, CO-SD-ML-160, CO-EW-210_R, CO-SL-LP-520, CO-SD-ML-250, CO-SD-PO-110-P1, CO-SD-PO-110-P2, CO-SD-ML-TF-110, CO-SD-MH-380, CO-SD-MH-TF-230 |
| CO-SD-CB-TF-260 |  | Testing Works for Catch Basins of Storm Drainage Network for Alignment-RD-03-2 | 9d | 2027-06-02 | 2027-06-12 | CO-SD-CB-200, PRO-R25-SD-DL-110, PRO-R25-SD-DL-130, PRO-SD-1DL-130, PRO-SD-1DL-120, CO-SD-CB-190, ENG-MT-SD-CB-A-110, ENG-SH-SD-CB-A-110, ENG-MS-SD-CB-A-110, MS-CS-SD SS, CO-SD-ML-250, MS-MM-130, MS-MM-140, CO-SD-CB-180, CO-SD-CB-TF-190, CO-SD-MH-380, PRO-SD-1DL-140, PRO-R25-SD-DL-140, CO-SD-MH-260, PRO-R25-RD-DL-170, PRO-RD-1DL-130, PRO-R25-RD-DL-100, PRO-RD-1DL-100, MS-CS-RD SS, ENG-SH-RD-A-100, ENG-SH-RD-A-110, ENG-MS-RD-A-30, ENG-MS-RD-A-20, ENG-MS-RD-A-10, ENG-MS-RD-A-40, CO-TE-MH-190, CO-TE-DW-160, CO-SL-CL-300, CO-SL-LP-380, CON-LV-HC-150, CON-LV-ML-150, CO-MV-ML-300, CO-IR-ML-180, CO-PW-FH-190, CO-PW-VC-250, CO-PW-ML-160, CO-TSE-ML-230, CO-SW-ML-160, CO-SW-MH-250, CO-SD-ML-160, CO-EW-210_R, CO-SL-LP-520, CO-SD-PO-110-P1, CO-SD-PO-110-P2, CO-SD-ML-TF-110, CO-SD-CB-TF-170 |
|  | 10 | **Sewage Network** |  |  |  |  |
|  | TF | **Testing and Finishes** |  |  |  |  |
|  | 13 | **Irrigation Network** |  |  |  |  |
|  | TF | **Testing and Finishes** |  |  |  |  |
|  | 14 | **Medium Voltage Network** |  | 2027-04-05 | 2027-04-11 |  |
|  | TT | **Termination and Testing Works** |  | 2027-04-05 | 2027-04-11 |  |
| CO-MV-TF-260 |  | Testing and Termination Works of Medium Voltage Network for Alignment-RD-03-2 | 6d | 2027-04-05 | 2027-04-11 | CO-MV-ML-390, CO-MV-TF-230 |
|  | 6 | **Low Voltage Network** |  | 2027-04-28 | 2027-05-25 |  |
|  | TT | **Termination and Testing Works** |  | 2027-04-28 | 2027-05-25 |  |
| CON-LV-TT-190 |  | Testing and Termination Works for Distribution Pillars Units of Low Voltage Network for Alignment-RD-03-2 | 6d | 2027-04-28 | 2027-05-04 | PRO-LV-TT-1DL-100, PRO-LV-TT-DL-100, CON-LV-DP-240, CO-MV-TF-260, CO-MV-TF-230, PRO-LV-DP-1DL-100, PRO-LV-DP-DL-100, CON-LV-DP-130 |
| CON-LV-TT-180 |  | Testing and Termination Works for Substation Low Voltage Panel Boards of Low Voltage Network for Alignment-RD-03-2 | 7d | 2027-05-12 | 2027-05-25 | CON-LV-TT-190, PRO-LV-TT-1DL-100, PRO-LV-TT-DL-100, CON-LV-HC-240, CON-LV-ML-240, CON-LV-TT-120 |
|  | 1 | **Earthing System Works** |  | 2027-05-05 | 2027-05-06 |  |
| CON-LV-ES-140 |  | Earthing System Works for Distribution Pillars Units of Low Voltage Network for Alignment-RD-03-2 | 2d | 2027-05-05 | 2027-05-06 | CON-LV-TT-190, PRO-LV-DP-1DL-110, PRO-LV-DP-DL-120, CON-LV-DP-240, PRO-LV-DP-1DL-100, PRO-LV-DP-DL-100, CON-LV-DP-130, PRO-LV-TT-1DL-100, PRO-LV-TT-DL-100, CO-MV-TF-230 |
|  | 12 | **Street Lighting Network** |  | 2027-04-20 | 2027-05-06 |  |
|  | TR | **Termination and Testing Works** |  | 2027-04-20 | 2027-05-06 |  |
| CO-SL-LP-530 |  | Installation Works for Lighting Fixtures With Drop Wire of Street Lighting Network for Alignment-RD-03-2 | 6d | 2027-04-20 | 2027-04-26 | PRO-R25-SL-DL-160, CO-SL-CL-390, ENG-MT-SL-DB-A-100, MS-CS-SL SS, MS-MM-130, MS-MM-140, CO-EW-240, ENG-MT-SL-A-120, PRO-R25-SL-DL-140, CO-SL-LP-520, CO-SL-LP-370 |
| CO-SL-TF-530 |  | Testing Works for Lighting Poles of Street Lighting Network for Alignment-RD-03-2 | 6d | 2027-05-01 | 2027-05-06 | PRO-R25-SL-DL-160, CO-SL-LP-520, CO-SL-CL-390, ENG-MT-SL-DB-A-100, MS-CS-SL SS, MS-MM-130, MS-MM-140, CO-EW-240, CO-SL-LP-530, PRO-R25-SL-DL-130 |
|  | ES | **Earthing System Works** |  | 2027-05-01 | 2027-05-05 |  |
| CO-SL-ES-300 |  | Install Earthing System Works for Lighting Poles of Street Lighting Network for Alignment-RD-03-2 | 3d | 2027-05-01 | 2027-05-03 | CO-SL-LP-530, ENG-MT-SL-ES-A-100, PRO-R25-SL-DL-150 |
| CO-SL-ES-310 |  | Install Earthing System Works for Lighting Panel Boards of Street Lighting Network for Alignment-RD-03-2 | 2d | 2027-05-04 | 2027-05-05 | CO-SL-ES-300, PRO-R25-SL-DL-150 |
|  | 3 | **Telecom and Light Current Network** |  | 2027-05-22 | 2027-05-25 |  |
|  | 1 | **Testing and Finishes** |  | 2027-05-22 | 2027-05-25 |  |
| CO-TE-CTV-TF-320 |  | Testing and Interface modules with CCTV, Telephone, MSN and Access Control for Alignment-RD-03-2 | 4d | 2027-05-22 | 2027-05-25 | CO-TE-CTV-240, CO-TE-CTV-150 SS, CO-TE-CTV-TF-180, CO-TE-CTV-TF-310 |
|  | 4 | **Alignment-RD-03-3** |  | 2026-11-16 | 2027-06-05 |  |
|  | EW | **Earthworks** |  | 2026-11-16 | 2026-11-28 |  |
|  | EW | **Earthworks** |  | 2026-11-16 | 2026-11-28 |  |
| CO-EW-230 |  | Excavation and Backfilling Works Upto Design Level for Earthworks for Alignment-RD-03-3 | 11d | 2026-11-16 | 2026-11-28 | MS-CS-PS SS, MOB-30, MOB-20, MOB-80, MOB-40, MOB-50, MOB-60, MOB-10, MOB-70, PRE-CON-MDC-10, PRE-CON-MDC-20, PRE-CON-MDC-30, PRE-CON-MDC-40, PRE-CON-MDC-50, PRE-CON-MDC-60, PRE-CON-MDC-70, PRE-CON-MDC-80, MS-MM-100, MS-MM-130, MS-MM-140, MS-MM-150, CO-EW-200 |
|  | SD | **Storm Drainage Network** |  | 2026-12-16 | 2026-12-27 |  |
|  | MH | **Manholes** |  |  |  |  |
|  | ML | **Main Line Sections** |  | 2026-12-16 | 2026-12-27 |  |
| CO-SD-ML-200 |  | Trench Excavation and Bedding Works for Main Lines of Storm Drainage Network for Alignment-RD-03-3 | 3d | 2026-12-16 | 2026-12-19 | ENG-MT-SD-ML-A-100, ENG-MT-SD-ML-A-100 FF, CO-EW-230 FF, ENG-MS-SD-ML-A-110 FF, ENG-MT-SD-ML-A-110 FF, ENG-SH-SD-ML-A-110 FF, MS-MM-130 FF, MS-MM-140 FF, CO-SD-MH-180, CO-SD-MH-180 FF, PRO-SD-1DL-100, CO-SD-MH-200, PRO-R25-SD-DL-100, CO-SD-MH-190, CO-EW-230, ENG-SH-SD-ML-A-110, ENG-MS-SD-ML-A-110, ENG-MT-SD-ML-A-110, MS-CS-SD SS, MS-MM-130, MS-MM-140, CO-SD-ML-100 |
| CO-SD-ML-210 |  | Pipes Laying Works for Main Lines of Storm Drainage Network for Alignment-RD-03-3 | 3d | 2026-12-20 | 2026-12-22 | PRO-SD-1DL-100, CO-SD-MH-200, PRO-R25-SD-DL-100, CO-SD-MH-190, ENG-MT-SD-ML-A-100, MS-CS-SD SS, CO-EW-230, ENG-MS-SD-ML-A-110, ENG-MT-SD-ML-A-110, ENG-SH-SD-ML-A-110, MS-MM-130, MS-MM-140, CO-SD-MH-180, CO-SD-ML-200, PRO-R25-SD-DL-120 FF, PRO-SD-1DL-110, CO-SD-ML-120 |
| CO-SD-ML-220 |  | Trench Backfilling and Compaction Works for Main Lines of Storm Drainage Network for Alignment-RD-03-3 | 3d | 2026-12-24 | 2026-12-27 | CO-SD-MH-220 FF, PRO-SD-1DL-100 FF, CO-SD-MH-200 FF, PRO-R25-SD-DL-100 FF, CO-SD-MH-190 FF, ENG-MT-SD-ML-A-100 FF, CO-EW-230 FF, ENG-MS-SD-ML-A-110 FF, ENG-MT-SD-ML-A-110 FF, ENG-SH-SD-ML-A-110 FF, MS-MM-130 FF, MS-MM-140 FF, CO-SD-MH-180 FF, CO-SD-ML-210, CO-SD-ML-130 |
|  | CB | **Catch Basin Sections** |  |  |  |  |
|  | SW | **Sewage Network** |  |  |  |  |
|  | 1 | **Manholes** |  |  |  |  |
|  | ML | **Main Line Sections** |  |  |  |  |
|  | TSE | **Treated Sewage Effluent (Tse)** |  | 2026-12-28 | 2027-02-03 |  |
| CO-TSE-ML-300 |  | Trench Excavation and Bedding Works for Main Lines of Treated Sewage Effluent (Tse) for Alignment-RD-03-3 | 11d | 2026-12-28 | 2027-01-09 | PRO-SW-1DL-110 SS, ENG-MT-SW-ML-A-100, ENG-SH-SW-ML-A-110, MS-CS-SW SS, ENG-MS-SW-ML-A-110, CO-SD-MH-220, PRO-SD-1DL-100, CO-SD-MH-200, PRO-R25-SD-DL-100, CO-SD-MH-190, ENG-MT-SD-ML-A-100, MS-CS-SD SS, ENG-MS-SD-ML-A-110, ENG-MT-SD-ML-A-110, ENG-SH-SD-ML-A-110, CO-SD-MH-180, PRO-SW-1DL-100, ENG-MT-SW-ML-A-110, CO-SD-ML-220, ENG-SH-TSE-ML-A-120, ENG-MS-TSE-ML-A-120, ENG-MT-IR-ML-A-120, MS-CS-TSE SS, CO-EW-230, MS-MM-130, MS-MM-140 |
| CO-TSE-ML-310 |  | Pipes Laying Works for Main Lines of Treated Sewage Effluent (Tse) for Alignment-RD-03-3 | 11d | 2027-01-10 | 2027-01-21 | CO-TSE-ML-300, PRO-TSE-1DL-120, PRO-R25-TSE-DL-120 |

| ID | WBS | Task | Duration | Start | Finish | Predecessors |
| --- | --- | --- | --- | --- | --- | --- |
| CO-TSE-ML-330 |  | Trench Backfilling and Compaction Works for Treated Sewage Effluent (Tse) for Alignment-RD-03-3 | 11d | 2027-01-23 | 2027-02-03 | CO-TSE-ML-310 |
|  | PW | **Potable Water Network** |  | 2027-02-04 | 2027-03-16 |  |
|  | ML | **Main Line Sections** |  | 2027-02-04 | 2027-03-14 |  |
| CO-PW-ML-200 |  | Trench Excavation and Bedding Works for Main Lines of Potable Water Network for Alignment-RD-03-3 | 10d | 2027-02-04 | 2027-02-15 | PRO-SW-1DL-110 SS, ENG-MT-SW-ML-A-100, ENG-SH-SW-ML-A-110, MS-CS-SW SS, ENG-MS-SW-ML-A-110, CO-SD-MH-220, PRO-SD-1DL-100, CO-SD-MH-200, PRO-R25-SD-DL-100, CO-SD-MH-190, ENG-MT-SD-ML-A-100, MS-CS-SD SS, ENG-MS-SD-ML-A-110, ENG-MT-SD-ML-A-110, ENG-SH-SD-ML-A-110, CO-SD-MH-180, PRO-SW-1DL-100, ENG-MT-SW-ML-A-110, CO-SD-ML-220, ENG-SH-PW-ML-A-110, ENG-MS-PW-ML-A-110, ENG-MT-PW-ML-A-100, MS-CS-PW SS, CO-EW-230, MS-MM-130, MS-MM-140, CO-TSE-ML-330 |
| CO-PW-ML-210 |  | Pipes Laying and accessories for Main Lines of Potable Water Network for Alignment-RD-03-3 | 10d | 2027-02-16 | 2027-02-27 | CO-PW-ML-200, PRO-PW-1DL-100, PRO-R25-PW-DL-100 |
| CO-PW-ML-220 |  | Trench Backfilling and Compaction Works for Main Lines of Potable Water Network for Alignment-RD-03-3 | 10d | 2027-02-28 | 2027-03-14 | CO-PW-ML-210 |
|  | VC | **Valve Chamber** |  | 2027-02-04 | 2027-03-16 |  |
| CO-PW-VC-290 |  | Excavation Works for Main Line Valves and Valve Chambers of Potable Water Network for Alignment-RD-03-3 | 10d | 2027-02-04 | 2027-02-15 | ENG-MT-PW-ML-A-110, MS-CS-PW SS, CO-PW-ML-200 SS, CO-PW-ML-200 FF, MS-MM-130, MS-MM-140 |
| CO-PW-VC210 |  | Installation of Valve Chambers of Potable Water Network for Alignment-RD-03-3 | 10d | 2027-02-16 | 2027-02-27 | CO-PW-VC-290, PRO-R25-PW-DL-120 |
| CO-PW-VC-300 |  | Installation Works for Valves of Potable Water Network for Alignment-RD-03-3 | 9d | 2027-02-28 | 2027-03-13 | CO-PW-VC210, PRO-PW-1DL-110, PRO-R25-PW-DL-110, CO-PW-VC-190 |
| CO-PW-VC-310 |  | Backfilling Works for Main Line Valves and Valve Chambers of Potable Water Network for Alignment-RD-03-3 | 3d | 2027-03-14 | 2027-03-16 | CO-PW-VC-300, CO-PW-ML-220 FF, CO-PW-VC-220 SS |
|  | FH | **Fire Hydrant** |  | 2027-02-16 | 2027-03-16 |  |
| CO-PW-FH-230 |  | Excavation Works for Fire Hydrants of Potable Water Network for Alignment-RD-03-3 | 10d | 2027-02-16 | 2027-02-27 | CO-PW-VC-290, ENG-SH-PW-FH-A-110, ENG-MT-PW-FH-A-100, MS-CS-PW SS, CO-EW-230, MS-MM-130, MS-MM-140, CO-PW-FH-140 |
| CO-PW-FH-240 |  | Installation Works for Fire Hydrant of Potable Water Network for Alignment-RD-03-3 | 10d | 2027-02-28 | 2027-03-14 | CO-PW-FH-230, PRO-PW-1DL-120, CO-PW-ML-210, CO-PW-FH-150 |
| CO-PW-FH-250 |  | Trench Backfilling and Compaction Works for Fire Hydrants of Potable Water Network for Alignment-RD-03-3 | 2d | 2027-03-15 | 2027-03-16 | CO-PW-FH-240, CO-PW-VC-310 FF, CO-PW-FH-160 SS |
|  | IR | **Irrigation Network** |  | 2027-02-16 | 2027-03-16 |  |
|  | ML | **Main Line Pipes** |  | 2027-02-16 | 2027-03-16 |  |
| CO-IR-ML-350 |  | Trench Excavation and Bedding Works for Main Lines of Irrigation Network for Alignment-RD-03-3 | 10d | 2027-02-16 | 2027-02-27 | ENG-SH-IR-ML-A-110, ENG-MS-IR-ML-A-110, ENG-MT-IR-ML-A-100, MS-CS-IR SS, MS-MM-130, MS-MM-140, CO-EW-230, CO-PW-ML-200 |
| CO-IR-ML-360 |  | Pipes Laying Works for Main Lines of Irrigation Network for Alignment-RD-03-3 | 3d | 2027-02-28 | 2027-03-02 | CO-IR-ML-350, PRO-IR-1DL-100, PRO-R25-IR-DL-100, CO-PW-ML-210 |
| CO-IR-ML-370 |  | Installation Works for Main Line Valves of Irrigation Network for Alignment-RD-03-3 | 3d | 2027-03-03 | 2027-03-06 | CO-IR-ML-360, ENG-MT-IR-ML-A-110, PRO-IR-1DL-110, PRO-R25-IR-DL-110 |
| CO-IR-ML-390 |  | Installation Works for Bulbblers And Sprinkler and Irrigation Control System of Irrigation Network for Alignment-RD-03-3 | 3d | 2027-03-07 | 2027-03-13 | CO-IR-ML-370 |
| CO-IR-ML-380 |  | Trench Backfilling and Compaction Works for Main Lines of Irrigation Network for Alignment-RD-03-3 | 3d | 2027-03-14 | 2027-03-16 | CO-IR-ML-390 |
|  | MV | **Medium Voltage Network** |  | 2027-03-23 | 2027-04-05 |  |
|  | CW | **Cabling Works** |  | 2027-03-23 | 2027-04-05 |  |
| CO-MV-ML-340 |  | Trench Excavation and Bedding Works for Medium Voltage Network for Alignment-RD-03-3 | 3d | 2027-03-23 | 2027-03-25 | CO-SD-MH-220, PRO-SD-1DL-100, CO-SD-MH-200, PRO-R25-SD-DL-100, CO-SD-MH-190, ENG-MT-SD-ML-A-100, MS-CS-SD SS, ENG-MS-SD-ML-A-110, ENG-MT-SD-ML-A-110, ENG-SH-SD-ML-A-110, CO-SD-MH-180, CO-SD-ML-130, PRO-R25-SD-DL-110, PRO-R25-SD-DL-130, PRO-SD-1DL-130, PRO-SD-1DL-120, ENG-MT-SD-CB-A-110, ENG-SH-SD-CB-A-110, ENG-MS-SD-CB-A-110, PRO-SW-1DL-110 SS, ENG-MT-SW-ML-A-100, ENG-SH-SW-ML-A-110, MS-CS-SW SS, ENG-MS-SW-ML-A-110, PRO-SW-1DL-100, ENG-MT-SW-ML-A-110, ENG-SH-MV-A-110, ENG-MS-MV-A-110, MS-CS-MV SS, CO-SD-ML-220, CO-EW-230, MS-MM-130, MS-MM-140, CO-PW-ML-220, CO-MV-ML-370 |
| CO-MV-ML-350 |  | Duct Laying Works for Medium Voltage Network for Alignment-RD-03-3 | 3d | 2027-03-30 | 2027-04-01 | CO-MV-ML-340, PRO-MV-DL-100, PRO-MV-1DL-100, CO-MV-ML-380 |
| CO-MV-ML-360 |  | Trench Backfilling and Compaction Works for Medium Voltage Network for Alignment-RD-03-3 | 3d | 2027-04-03 | 2027-04-05 | CO-MV-ML-350 |
|  | LV | **Low Voltage Network** |  | 2027-04-06 | 2027-05-08 |  |
|  | MLVC | **Main Low Voltage Cables Works ( Cable 300 MM )** |  | 2027-04-06 | 2027-04-26 |  |
| CON-LV-ML-190 |  | Trench Excavation and Bedding Works for Main Cable of Low Voltage Network for Alignment-RD-03-3 | 7d | 2027-04-06 | 2027-04-13 | CO-SD-ML-130, PRO-R25-SD-DL-110, PRO-R25-SD-DL-130, PRO-SD-1DL-130, PRO-SD-1DL-120, ENG-MT-SD-CB-A-110, ENG-SH-SD-CB-A-110, ENG-MS-SD-CB-A-110, MS-CS-SD SS, CO-SD-ML-220, PRO-SW-1DL-110 SS, ENG-MT-SW-ML-A-100, ENG-SH-SW-ML-A-110, MS-CS-SW SS, ENG-MS-SW-ML-A-110, CO-SD-MH-220, PRO-SD-1DL-100, CO-SD-MH-200, PRO-R25-SD-DL-100, CO-SD-MH-190, ENG-MT-SD-ML-A-100, ENG-MS-SD-ML-A-110, ENG-MT-SD-ML-A-110, ENG-SH-SD-ML-A-110, CO-SD-MH-180, PRO-SW-1DL-100, ENG-MT-SW-ML-A-110, CO-PW-ML-220, ENG-SH-LV-A-120, ENG-MS-MV-A-120, MS-CS-LV SS, CO-MV-ML-360, CO-EW-230, MS-MM-130, MS-MM-140, CON-LV-ML-100 |
| CON-LV-ML-200 |  | Cable Laying Works for Main Cable of Low Voltage Network for Alignment-RD-03-3 | 7d | 2027-04-14 | 2027-04-21 | CON-LV-ML-190, PRO-LV-ML-1DL-100, PRO-LV-ML-DL-100, CON-LV-ML-110 |
| CON-LV-ML-210 |  | Trench Backfilling and Compaction Works for Main Cable of Low Voltage Network for Alignment-RD-03-3 | 4d | 2027-04-22 | 2027-04-26 | CON-LV-ML-200, CON-LV-ML-120 |
|  | SLVC | **Service Low Voltage Cables Works ( Cable 70 MM )** |  | 2027-04-14 | 2027-05-03 |  |
| CON-LV-HC-190 |  | Trench Excavation and Bedding Works for Service Cable of Low Voltage Network for Alignment-RD-03-3 | 7d | 2027-04-14 | 2027-04-21 | CO-SD-MH-220, PRO-SD-1DL-100, CO-SD-MH-200, PRO-R25-SD-DL-100, CO-SD-MH-190, ENG-MT-SD-ML-A-100, MS-CS-SD SS, ENG-MS-SD-ML-A-110, ENG-MT-SD-ML-A-110, ENG-SH-SD-ML-A-110, CO-SD-MH-180, CO-SD-ML-130, PRO-R25-SD-DL-110, PRO-R25-SD-DL-130, PRO-SD-1DL-130, PRO-SD-1DL-120, ENG-MT-SD-CB-A-110, ENG-SH-SD-CB-A-110, ENG-MS-SD-CB-A-110, PRO-SW-1DL-110 SS, ENG-MT-SW-ML-A-100, ENG-SH-SW-ML-A-110, MS-CS-SW SS, ENG-MS-SW-ML-A-110, PRO-SW-1DL-100, ENG-MT-SW-ML-A-110, CON-LV-ML-190, ENG-MS-MV-A-120, MS-CS-LV SS, CO-EW-230, ENG-SH-LV-A-120, MS-MM-130, MS-MM-140, CO-PW-ML-220, CO-PW-VC-310, CO-PW-FH-250, CO-TSE-ML-330, CO-SD-ML-220, CON-LV-HC-100 |
| CON-LV-HC-200 |  | Cable Laying Works for Service Cable of Low Voltage Network for Alignment-RD-03-3 | 7d | 2027-04-22 | 2027-04-29 | CON-LV-HC-190, CON-LV-ML-200, PRO-LV-HC-1DL-100, PRO-LV-HC-DL-100, CON-LV-HC-110 |
| CON-LV-HC-210 |  | Trench Backfilling and Compaction Works for Service Cable of Low Voltage Network for Alignment-RD-03-3 | 3d | 2027-05-01 | 2027-05-03 | CON-LV-HC-200, CON-LV-ML-210 FF, CON-LV-HC-120 |
|  | DP | **Distribution Pillars Works** |  | 2027-05-04 | 2027-05-08 |  |
| CON-LV-DP-190 |  | Installation Works for Distribution Pillar Units of Low Voltage Network for Alignment-RD-03-3 | 4d | 2027-05-04 | 2027-05-08 | ENG-MS-MV-A-120, MS-CS-LV SS, CO-EW-230, MS-MM-130, MS-MM-140, CON-LV-DP-100, CON-LV-HC-210 |
|  | SL | **Street Lighting Network** |  | 2027-04-06 | 2027-04-26 |  |
|  | LP | **Lighting Poles Works** |  | 2027-04-06 | 2027-04-26 |  |
| CO-SL-LP-450 |  | Installation Works for Lighting Poles Foundation of Street Lighting Network for Alignment-RD-03-3 | 6d | 2027-04-06 | 2027-04-12 | ENG-SH-SL-A-110, ENG-MS-SL-A-110, ENG-MT-SL-A-100, MS-CS-SL SS, CO-EW-230, MS-MM-130, MS-MM-140, CO-MV-ML-360, PRO-R25-SL-DL-110 |
| CO-SL-LP-460 |  | Installation Works for Lighting Poles of Street Lighting Network for Alignment-RD-03-3 | 6d | 2027-04-13 | 2027-04-19 | CO-SL-LP-450, ENG-MT-SL-A-110, PRO-R25-SL-DL-120 |
| CO-SL-LP-480 |  | Backfilling Works for Lighting Poles of Street Lighting Network for Alignment-RD-03-3 | 6d | 2027-04-20 | 2027-04-26 | CO-SL-LP-460 |
|  | CW | **Cabling Works** |  | 2027-04-20 | 2027-04-26 |  |
| CO-SL-CL-350 |  | Cable Laying Works for Street Lighting Network for Alignment-RD-03-3 | 6d | 2027-04-20 | 2027-04-26 | ENG-SH-SL-A-110, ENG-MS-SL-A-110, ENG-MT-SL-ML-A-100, PRO-SL-1DL-100, MS-CS-SL SS, MS-MM-130, MS-MM-140, CO-SL-LP-460, CO-MV-ML-360, CO-PW-ML-220, CO-PW-FH-250, CO-SD-ML-220, CO-EW-230, CO-IR-ML-380, CO-SD-MH-220, PRO-SD-1DL-100, CO-SD-MH-200, PRO-R25-SD-DL-100, CO-SD-MH-190, ENG-MT-SD-ML-A-100, MS-CS-SD SS, ENG-MS-SD-ML-A-110, ENG-MT-SD-ML-A-110, ENG-SH-SD-ML-A-110, CO-SD-MH-180, CO-SD-ML-130, PRO-R25-SD-DL-110, PRO-R25-SD-DL-130, PRO-SD-1DL-130, PRO-SD-1DL-120, ENG-MT-SD-CB-A-110, ENG-SH-SD-CB-A-110, ENG-MS-SD-CB-A-110, PRO-SW-1DL-110 SS, ENG-MT-SW-ML-A-100, ENG-SH-SW-ML-A-110, MS-CS-SW SS, ENG-MS-SW-ML-A-110, PRO-SW-1DL-100, ENG-MT-SW-ML-A-110, PRO-R25-SL-DL-100 |
| CO-SL-CL-360 |  | Trench Backfilling and Compaction Works for Street Lighting Network for Alignment-RD-03-3 | 6d | 2027-04-20 | 2027-04-26 | CO-SL-CL-350 FF, CO-SL-CL-350 SS, CO-SL-LP-480 FF |
|  | DPB | **Distrubution Panel Boards** |  |  |  |  |
|  | TE | **Telecom and Light Current Network** |  | 2027-04-15 | 2027-05-20 |  |
|  | PD | **Ducts Works** |  | 2027-05-04 | 2027-05-20 |  |
| CO-TE-DW-230 |  | Pipes Laying Works for Ducts of Telecom Network for Alignment-RD-03-3 | 6d | 2027-05-04 | 2027-05-10 | ENG-SH-TE-A-110, ENG-MS-TE-A-110, ENG-MT-TE-A-100, PRO-TE-1DL-100, MS-CS-TE SS, MS-MM-130, MS-MM-140, CO-SD-ML-220, CO-PW-ML-220, CO-PW-VC-310, CO-PW-FH-250, CO-MV-ML-360, CON-LV-ML-210, CON-LV-HC-210, CO-SL-LP-480, CO-SL-CL-360, CO-EW-230, CO-IR-ML-380, CO-SD-MH-220, CO-SD-ML-130, CO-PW-ML-130, CO-PW-VC-220, CO-PW-FH-160, CON-LV-ML-120, CON-LV-HC-120, CO-EW-200, CO-SL-LP-570, CO-SL-CL-420, PRO-R25-SD-DL-110, PRO-R25-SD-DL-130, PRO-SD-1DL-130, PRO-SD-1DL-120, ENG-MT-SD-CB-A-110, ENG-SH-SD-CB-A-110, ENG-MS-SD-CB-A-110, MS-CS-SD SS, PRO-SW-1DL-110, PRO-R25-SW-DL-110, ENG-MT-SW-ML-A-100, ENG-SH-SW-ML-A-110, MS-CS-SW SS, ENG-MS-SW-ML-A-110, PRO-SW-1DL-100, PRO-R25-SW-DL-100, ENG-MT-SW-ML-A-110, ENG-MT-IR-ML-A-110, PRO-IR-1DL-110, PRO-R25-IR-DL-110, PRO-IR-1DL-100, CO-PW-ML-110, PRO-R25-IR-DL-100, ENG-SH-IR-ML-A-110, ENG-MS-IR-ML-A-110, ENG-MT-IR-ML-A-100, CO-PW-ML-100, MS-CS-IR SS, PRO-R25-SL-DL-160, ENG-MT-SL-DB-A-100, MS-CS-SL SS, PRO-SD-1DL-100, CO-SD-MH-200, PRO-R25-SD-DL-100, CO-SD-MH-190, ENG-MT-SD-ML-A-100, ENG-MS-SD-ML-A-110, ENG-MT-SD-ML-A-110, ENG-SH-SD-ML-A-110, CO-SD-MH-180, PRO-SW-1DL-110 SS, PRO-R25-TE-DL-100, CO-TE-DW-110 SS |
| CO-TE-DW-240 |  | Trench Backfilling and Compaction Works for Ducts of Telecom Network for Alignment-RD-03-3 | 4d | 2027-05-11 | 2027-05-20 | CO-TE-DW-230, CO-TE-DW-110, CO-TE-MH-250 FF, CO-TE-DW-130 SS |
|  | MH | **Manholes Works** |  | 2027-04-15 | 2027-04-24 |  |
| CO-TE-MH-230 |  | Excavation Works for Manholes of Telecom Network for Alignment-RD-03-3 | 2d | 2027-04-15 | 2027-04-17 | ENG-MT-TE-A-100, PRO-TE-1DL-100, CO-SD-ML-220, CO-PW-ML-220, CO-PW-VC-310, CO-PW-FH-250, CO-MV-ML-360, CO-EW-230, CO-IR-ML-380, CO-SD-MH-220, CO-SD-ML-130, CO-PW-ML-130, CO-PW-VC-220, CO-PW-FH-160, CON-LV-ML-120, CON-LV-HC-120, CO-EW-200, CO-SL-LP-570, CO-SL-CL-420, PRO-R25-SD-DL-110, PRO-R25-SD-DL-130, PRO-SD-1DL-130, PRO-SD-1DL-120, ENG-MT-SD-CB-A-110, ENG-SH-SD-CB-A-110, ENG-MS-SD-CB-A-110, MS-CS-SD SS, PRO-SW-1DL-110, PRO-R25-SW-DL-110, ENG-MT-SW-ML-A-100, ENG-SH-SW-ML-A-110, MS-CS-SW SS, ENG-MS-SW-ML-A-110, PRO-SW-1DL-100, PRO-R25-SW-DL-100, ENG-MT-SW-ML-A-110, ENG-MT-IR-ML-A-110, PRO-IR-1DL-110, PRO-R25-IR-DL-110, PRO-IR-1DL-100, CO-PW-ML-110, PRO-R25-IR-DL-100, ENG-SH-IR-ML-A-110, ENG-MS-IR-ML-A-110, ENG-MT-IR-ML-A-100, CO-PW-ML-100, MS-CS-IR SS, PRO-R25-SL-DL-160, ENG-MT-SL-DB-A-100, MS-CS-SL SS, PRO-SD-1DL-100, CO-SD-MH-200, PRO-R25-SD-DL-100, CO-SD-MH-190, ENG-MT-SD-ML-A-100, ENG-MS-SD-ML-A-110, ENG-MT-SD-ML-A-110, ENG-SH-SD-ML-A-110, CO-SD-MH-180, PRO-SW-1DL-110 SS, ENG-SH-TE-A-110, ENG-MS-TE-A-110, ENG-MT-TE-A-110, PRO-TE-1DL-110, MS-CS-TE SS, MS-MM-130, MS-MM-140, CO-TE-MH-140 |
| CO-TE-MH-240 |  | Installation Works for Manholes of Telecom Network for Alignment-RD-03-3 | 3d | 2027-04-18 | 2027-04-20 | CO-TE-MH-230, PRO-R25-TE-DL-110, CO-TE-MH-150 |
| CO-TE-MH-250 |  | Backfilling Works for Manholes of Telecom Network for Alignment-RD-03-3 | 3d | 2027-04-21 | 2027-04-24 | CO-TE-MH-240, CO-TE-MH-160 |
|  | DD | **CCTV, Telephone, MSN, ACs System Works** |  | 2027-04-25 | 2027-04-27 |  |
| CO-TE-CTV-210 |  | Installation of CCTV, Telephone, ACS and MSN Systems Cables for Alignment-RD-03-3 | 3d | 2027-04-25 | 2027-04-27 | CO-TE-MH-250, ENG-SH-MSN-A-120, ENG-SH-CTV-A-110, ENG-MS-CTV-A-110, ENG-MT-CTV-A-100, PRO-CTV-1DL-100, MS-CS-TE SS, MS-MM-130, MS-MM-140, CO-TE-MH-160, PRO-R25-CTV-DL-100, CO-TE-CTV-110 |
|  | RD | **Road Works** |  | 2027-05-11 | 2027-05-25 |  |
|  | RD | **Roads Works** |  |  |  |  |
|  | LS | **Pavement Works** |  | 2027-05-11 | 2027-05-20 |  |
| CO-RD-PV-220 |  | Fixing of Curbstone for Sidewalks Pavement for Alignment-RD-03-3 | 4d | 2027-05-11 | 2027-05-20 | PRO-R25-RD-DL-110, PRO-RD-1DL-110, CO-RD-PB-150 SS, CO-EW-230, CO-SD-ML-220, CO-PW-ML-220, CO-PW-VC-310, CO-TSE-ML-330, CO-MV-ML-360, CO-SL-LP-480, CO-SL-CL-360, ENG-MS-RD-A-20, ENG-MS-RD-A-30, ENG-MS-RD-A-40, PRO-R25-RD-DL-100, CON-LV-HC-210, CON-LV-ML-210, ENG-MS-RD-A-10, ENG-SH-RD-A-100, ENG-SH-RD-A-110, MS-CS-RD SS, PRO-RD-1DL-100, MS-MM-130, MS-MM-140, CO-PW-FH-250, CO-TE-MH-250, CO-RD-PB-140, CO-IR-ML-380, CO-SD-MH-220, PRO-SD-1DL-100, CO-SD-MH-200, PRO-R25-SD-DL-100, CO-SD-MH-190, ENG-MT-SD-ML-A-100, MS-CS-SD SS, ENG-MS-SD-ML-A-110, ENG-MT-SD-ML-A-110, ENG-SH-SD-ML-A-110, CO-SD-MH-180, CO-SD-ML-130, PRO-R25-SD-DL-110, PRO-R25-SD-DL-130, PRO-SD-1DL-130, PRO-SD-1DL-120, ENG-MT-SD-CB-A-110, ENG-SH-SD-CB-A-110, ENG-MS-SD-CB-A-110, PRO-SW-1DL-110 SS, ENG-MT-SW-ML-A-100, ENG-SH-SW-ML-A-110, MS-CS-SW SS, ENG-MS-SW-ML-A-110, PRO-SW-1DL-100, ENG-MT-SW-ML-A-110, PRO-LV-DP-1DL-100, PRO-LV-DP-DL-100, CON-LV-DP-120, CON-LV-DP-190, CON-LV-DP-110, ENG-SH-MSN-A-120, ENG-SH-CTV-A-110, ENG-MS-CTV-A-110, ENG-MT-CTV-A-100, PRO-CTV-1DL-100, MS-CS-TE SS, CO-TE-MH-160, CO-TE-CTV-110, ENG-MS-HS-A-10, PRO-R25-RD-DL-130, PRO-RD-1DL-150, CO-RD-PV-160 |
| CO-RD-PV-230 |  | Fixing of Interlock Tiles for Sidewalks Pavement for Alignment-RD-03-3 | 4d | 2027-05-11 | 2027-05-20 | ENG-MS-HS-A-10, PRO-R25-RD-DL-120, PRO-RD-1DL-140, CO-RD-PV-220 SS, CO-RD-PV-170 SS |
|  | TS | **Traffic Signs Boards and Roads Marking** |  | 2027-05-11 | 2027-05-25 |  |
| CO-RD-F-RM-210 |  | Application of Road Marking Works For Road Works for Alignment-RD-03-3 | 3d | 2027-05-11 | 2027-05-13 | PRO-R25-RD-DL-110, PRO-RD-1DL-110, CO-RD-PB-150 SS, CO-TE-CTV-210, CO-EW-230, CO-SD-ML-220, CO-PW-ML-220, CO-PW-VC-310, CO-TSE-ML-330, CO-MV-ML-360, CO-SL-LP-480, CO-SL-CL-360, ENG-MS-RD-A-20, ENG-MS-RD-A-30, ENG-MS-RD-A-40, PRO-R25-RD-DL-100, CON-LV-HC-210, CON-LV-ML-210, ENG-MS-RD-A-10, ENG-SH-RD-A-100, ENG-SH-RD-A-110, MS-CS-RD SS, PRO-RD-1DL-100, MS-MM-130, MS-MM-140, CO-PW-FH-250, CO-TE-MH-250, CO-RD-PB-140, CO-IR-ML-380, CO-SD-MH-220, PRO-SD-1DL-100, CO-SD-MH-200, PRO-R25-SD-DL-100, CO-SD-MH-190, ENG-MT-SD-ML-A-100, MS-CS-SD SS, ENG-MS-SD-ML-A-110, ENG-MT-SD-ML-A-110, ENG-SH-SD-ML-A-110, CO-SD-MH-180, CO-SD-ML-130, PRO-R25-SD-DL-110, PRO-R25-SD-DL-130, PRO-SD-1DL-130, PRO-SD-1DL-120, ENG-MT-SD-CB-A-110, ENG-SH-SD-CB-A-110, ENG-MS-SD-CB-A-110, PRO-SW-1DL-110 SS, ENG-MT-SW-ML-A-100, ENG-SH-SW-ML-A-110, MS-CS-SW SS, ENG-MS-SW-ML-A-110, PRO-SW-1DL-100, ENG-MT-SW-ML-A-110, PRO-LV-DP-1DL-100, PRO-LV-DP-DL-100, CON-LV-DP-120, CON-LV-DP-190, CON-LV-DP-110, ENG-SH-MSN-A-120, ENG-SH-CTV-A-110, ENG-MS-CTV-A-110, ENG-MT-CTV-A-100, PRO-CTV-1DL-100, MS-CS-TE SS, CO-TE-MH-160, CO-TE-CTV-110, CO-RD-PV-230 SS, ENG-MS-MRK-A-10, PRO-R25-RD-DL-150, ENG-SH-MRK-A-110, PRO-RD-1DL-170, CO-RD-PV-220 SS, CO-RD-F-RM-180 SS |
| CO-RD-F-TS-150 |  | Installation Works of Traffic Signs Boards For Road Works for Alignment-RD-03-3 | 4d | 2027-05-22 | 2027-05-25 | PRO-R25-RD-DL-110, PRO-RD-1DL-110, CO-RD-PB-150 SS, CO-IR-TF-210, CO-TE-CTV-210, CO-EW-230, CO-SD-ML-220, CO-PW-ML-220, CO-PW-VC-310, CO-TSE-ML-330, CO-MV-ML-360, CO-SL-LP-480, CO-SL-CL-360, ENG-MS-RD-A-20, ENG-MS-RD-A-30, ENG-MS-RD-A-40, PRO-R25-RD-DL-100, CON-LV-HC-210, CON-LV-ML-210, ENG-MS-RD-A-10, ENG-SH-RD-A-100, ENG-SH-RD-A-110, MS-CS-RD SS, PRO-RD-1DL-100, MS-MM-130, MS-MM-140, CO-TE-DW-240, CO-PW-FH-250, CO-TE-MH-250, CO-RD-PB-140, CO-IR-ML-380, CO-SD-MH-220, PRO-SD-1DL-100, CO-SD-MH-200, PRO-R25-SD-DL-100, CO-SD-MH-190, ENG-MT-SD-ML-A-100, MS-CS-SD SS, ENG-MS-SD-ML-A-110, ENG-MT-SD-ML-A-110, ENG-SH-SD-ML-A-110, CO-SD-MH-180, CO-SD-ML-130, PRO-R25-SD-DL-110, PRO-R25-SD-DL-130, PRO-SD-1DL-130, PRO-SD-1DL-120, ENG-MT-SD-CB-A-110, ENG-SH-SD-CB-A-110, ENG-MS-SD-CB-A-110, PRO-SW-1DL-110 SS, ENG-MT-SW-ML-A-100, ENG-SH-SW-ML-A-110, MS-CS-SW SS, ENG-MS-SW-ML-A-110, PRO-SW-1DL-100, ENG-MT-SW-ML-A-110, PRO-LV-DP-1DL-100, PRO-LV-DP-DL-100, CON-LV-DP-120, CON-LV-DP-190, CON-LV-DP-110, ENG-SH-MSN-A-120, ENG-SH-CTV-A-110, ENG-MS-CTV-A-110, ENG-MT-CTV-A-100, PRO-CTV-1DL-100, MS-CS-TE SS, CO-TE-MH-160, CO-TE-CTV-110, CO-RD-F-RM-210, ENG-MS-TSB-A-10, PRO-R25-RD-DL-140, ENG-SH-TSB-A-100, PRO-RD-1DL-160, CO-RD-F-TS-120 |
|  | 3 | **Finishes for Infrastructure Networks** |  | 2027-04-06 | 2027-06-05 |  |
|  | 11 | **Storm Drainage Network** |  | 2027-05-13 | 2027-05-24 |  |
|  | TF | **Testing and Finishes** |  | 2027-05-13 | 2027-05-24 |  |
| CO-SD-ML-TF-130 |  | Testing Work for Pipes of Storm Drainage Network for Alignment-RD-03-3 | 5d | 2027-05-13 | 2027-05-24 | CO-SD-ML-220, CO-SD-PO-110-P1, CO-SD-PO-110-P2, CO-SD-ML-TF-100 |
|  | 10 | **Sewage Network** |  |  |  |  |

| ID | WBS | Task | Duration | Start | Finish | Predecessors | Complete |
| --- | --- | --- | --- | --- | --- | --- | --- |
|  | TF | **Testing and Finishes** |  |  |  |  |  |
|  | 9 | **Potable Water Network** |  | 2027-05-04 | 2027-05-11 |  |  |
|  | TF | **Testing and Finishes** |  | 2027-05-04 | 2027-05-11 |  |  |
| CO-PW-TF-200 |  | Fire Hydrant Finishies (S.Box + Safety + Marker Post ) of Potable Water Network for Alignment-RD-03-3 | 3d | 2027-05-04 | 2027-05-06 | CO-PW-FH-250, ENG-MT-PW-TF-A-100, CO-PW-TF-120 SS |  |
| CO-PW-TF-190 |  | Testing of Potable Water Network for Alignment-RD-03-3 | 3d | 2027-05-08 | 2027-05-10 | CO-PW-ML-220, CO-PW-TF-210 SS, CO-PW-TF-110 SS, CO-IR-ML-390 |  |
| CO-PW-TF-210 |  | Final Finishes works and Covers for Valves and Valve Chambers for Alignment-RD-03-3 | 4d | 2027-05-08 | 2027-05-11 | CO-PW-VC-310, ENG-MT-PW-TF-A-100, PRO-PW-1DL-130, PRO-R25-PW-DL-130, CO-PW-TF-200, CO-PW-TF-100 SS |  |
|  | 1 | **Treated Sewage Effluent (Tse)** |  | 2027-05-30 | 2027-06-05 |  |  |
|  | TF | **Testing and Finishes** |  | 2027-05-30 | 2027-06-05 |  |  |
| CO-TSE-TF-200 |  | Final Testing (pressure tests) of Treated Sewage Effluent (Tse) for Alignment-RD-03-3 | 6d | 2027-05-30 | 2027-06-05 | CO-TSE-ML-330, CO-TSE-TF-170, CO-PW-TF-190 |  |
|  | 13 | **Irrigation Network** |  | 2027-05-08 | 2027-05-13 |  |  |
|  | TF | **Testing and Finishes** |  | 2027-05-08 | 2027-05-13 |  |  |
| CO-IR-TF-210 |  | Final Testing (pressure tests) of Irrigation Network for Alignment-RD-03-3 | 6d | 2027-05-08 | 2027-05-13 | CO-IR-ML-390, CO-PW-TF-190 SS |  |
|  | 14 | **Medium Voltage Network** |  | 2027-04-06 | 2027-04-12 |  |  |
|  | TT | **Termination and Testing Works** |  | 2027-04-06 | 2027-04-12 |  |  |
| CO-MV-TF-250 |  | Testing and Termination Works of Medium Voltage Network for Alignment-RD-03-3 | 6d | 2027-04-06 | 2027-04-12 | CO-MV-ML-360 |  |
|  | 6 | **Low Voltage Network** |  | 2027-05-09 | 2027-05-20 |  |  |
|  | TT | **Termination and Testing Works** |  | 2027-05-09 | 2027-05-20 |  |  |
| CON-LV-TT-160 |  | Testing and Termination Works for Substation Low Voltage Panel Boards of Low Voltage Network for Alignment-RD-03-3 | 6d | 2027-05-09 | 2027-05-20 | CON-LV-TT-110, CO-MV-TF-250, PRO-LV-DP-1DL-100, PRO-LV-DP-DL-100, CON-LV-DP-120, CON-LV-DP-190, CON-LV-DP-110, PRO-LV-TT-1DL-100, PRO-LV-TT-DL-100, CON-LV-HC-210, CON-LV-ML-210, CON-LV-TT-100 |  |
|  | 1 | **Earthing System Works** |  |  |  |  |  |
|  | 12 | **Street Lighting Network** |  | 2027-05-04 | 2027-05-29 |  |  |
|  | TR | **Termination and Testing Works** |  | 2027-05-04 | 2027-05-29 |  |  |
| CO-SL-LP-470 |  | Installation Works for Lighting Fixtures With Drop Wire of Street Lighting Network for Alignment-RD-03-3 | 6d | 2027-05-04 | 2027-05-10 | PRO-R25-SL-DL-160, CO-SL-CL-360, ENG-MT-SL-DB-A-100, MS-CS-SL SS, CO-EW-230, MS-MM-130, MS-MM-140, CO-SL-LP-480, ENG-MT-SL-A-120, PRO-R25-SL-DL-140, CO-SL-LP-370, CO-SL-LP-580 |  |
| CO-SL-TF-490 |  | Testing Works for Lighting Poles of Street Lighting Network for Alignment-RD-03-3 | 6d | 2027-05-23 | 2027-05-29 | PRO-R25-SL-DL-160, CO-SL-LP-480, CO-SL-CL-360, ENG-MT-SL-DB-A-100, MS-CS-SL SS, CO-EW-230, MS-MM-130, MS-MM-140, CO-SL-LP-470, CO-SL-ES-290, PRO-R25-SL-DL-130, CO-SL-TF-410, CO-SL-TF-570 |  |
|  | ES | **Earthing System Works** |  | 2027-05-04 | 2027-05-22 |  |  |
| CO-SL-ES-280 |  | Install Earthing System Works for Lighting Poles of Street Lighting Network for Alignment-RD-03-3 | 6d | 2027-05-04 | 2027-05-10 | CO-SL-LP-470 SS, ENG-MT-SL-ES-A-100, PRO-R25-SL-DL-150, CO-SL-ES-240 SS, CO-SL-ES-320 SS |  |
| CO-SL-ES-290 |  | Install Earthing System Works for Lighting Panel Boards of Street Lighting Network for Alignment-RD-03-3 | 6d | 2027-05-10 | 2027-05-22 | CO-SL-ES-280 SS, PRO-R25-SL-DL-150, CO-SL-ES-250, CO-SL-ES-330 |  |
|  | 3 | **Telecom and Light Current Network** |  | 2027-04-29 | 2027-05-12 |  |  |
|  | 1 | **Testing and Finishes** |  | 2027-04-29 | 2027-05-12 |  |  |
| CO-TE-CTV-TF-260 |  | Testing and Interface modules with Telecom for Alignment-RD-03-3 | 6d | 2027-04-29 | 2027-05-05 | CO-TE-CTV-210, CO-TE-CTV-110, CO-TE-CTV-TF-140, CO-TE-CTV-TF-330 |  |
| CO-TE-CTV-TF-340 |  | Testing and Interface modules with CCTV, Telephone, MSN and Access Control for Alignment-RD-03-3 | 6d | 2027-05-06 | 2027-05-12 | CO-TE-CTV-210, CO-TE-CTV-110, CO-TE-CTV-TF-140, CO-TE-CTV-TF-330, CO-TE-CTV-TF-260 |  |
|  | EX | **External** |  | 2026-04-01 | 2027-05-24 |  |  |
|  | 2 | **External Road - 1 - 1** |  | 2026-04-01 | 2027-05-23 |  |  |
|  | EW | **Earthworks** |  | 2026-04-01 | 2027-01-04 |  |  |
|  | EW | **Earthworks** |  | 2026-04-01 | 2027-01-04 |  |  |
| CO-EW-250 |  | Excavation and Backfilling Works Upto Design Level for Earthworks for External Road - 1 - 1(Completed) | 67d | 2026-04-01 A | 2026-06-22 A | MS-CS-PS SS, MOB-30, MOB-20, MOB-80, MOB-40, MOB-50, MOB-60, MOB-10, MOB-70, PRE-CON-MDC-10, PRE-CON-MDC-20, PRE-CON-MDC-30, PRE-CON-MDC-40, PRE-CON-MDC-50, PRE-CON-MDC-60, PRE-CON-MDC-70, PRE-CON-MDC-80, MS-MM-100, MS-MM-130, MS-MM-140, MS-MM-150, CO-EW-270 SS | 100% |
| CO-EW-250_R |  | Excavation and Backfilling Works Upto Design Level for Earthworks for External Road - 1 - 1(Remaining) | 8d | 2026-12-27 | 2027-01-04 | CO-SD-ML-160, MS-CS-PS SS, MOB-30, MOB-20, MOB-80, MOB-40, MOB-50, MOB-60, MOB-10, MOB-70, PRE-CON-MDC-10, PRE-CON-MDC-20, PRE-CON-MDC-30, PRE-CON-MDC-40, PRE-CON-MDC-50, PRE-CON-MDC-60, PRE-CON-MDC-70, PRE-CON-MDC-80, MS-MM-100, MS-MM-130, MS-MM-140, MS-MM-150, CO-EW-250, CO-EW-210_R |  |
|  | RD | **Road Works** |  | 2026-10-28 | 2027-05-23 |  |  |
|  | 3 | **Road 01** |  | 2026-10-28 | 2027-05-23 |  |  |
|  | RD | **Pre-Bituminous Construction** |  | 2026-10-28 | 2027-04-22 |  |  |
| CO-RD-PB-240 |  | Subgrade Layer for Road Works for External Road - 1 - 1 | 8d | 2026-10-28 A | 2027-04-12 | CO-EW-250_R, ENG-MS-RD-A-20, ENG-MS-RD-A-30, ENG-MS-RD-A-40, PRO-R25-RD-DL-100, ENG-MS-RD-A-10, ENG-SH-RD-A-100, ENG-SH-RD-A-110, MS-CS-RD SS, PRO-RD-1DL-100, MS-MM-130, MS-MM-140, CO-RD-PB-280, MS-MM-120 | 69% |
| CO-RD-PB-250 |  | Aggregate Base Course Layer for Road Works for External Road - 1 - 1 | 9d | 2026-10-29 A | 2027-04-22 | CO-RD-PB-240, PRO-R25-RD-DL-110, PRO-RD-1DL-110 | 69% |
|  | 1 | **Bituminous Construction** |  | 2027-04-24 | 2027-05-02 |  |  |
| CO-RD-B-260 |  | Bituminous Base Courses Layers for Road Works for External Road - 1 - 1 | 4d | 2027-04-24 | 2027-04-27 | PRO-R25-RD-DL-160, PRO-R25-RD-DL-160 FF, CO-RD-PB-250 SS, CO-RD-PB-250, CO-RD-PB-250 FF, PRO-RD-1DL-120, PRO-RD-1DL-120 FF, PRO-R25-RD-DL-170, PRO-RD-1DL-130 |  |
| CON-RD-MR-250 |  | Preparation of Asphaltic Wearing Course Layer for Roads Network for External Road - 1 - 1 | 4d | 2027-04-28 | 2027-05-02 | PRO-RD-1DL-190, PRO-RD-1DL-190 FF, PRO-RD-DL-210, PRO-RD-DL-210 FF, CO-RD-B-260 SS, CO-RD-B-260, CO-RD-B-260 FF, PRO-RD-DL-200, PRO-RD-1DL-180 |  |
|  | LS | **Pavement Works** |  | 2027-04-28 | 2027-05-13 |  |  |
| CO-RD-PV-260 |  | Fixing of Curbstone for Sidewalks Pavement for External Road - 1 - 1 | 8d | 2027-04-28 | 2027-05-06 | ENG-MS-HS-A-10, PRO-R25-RD-DL-130, PRO-RD-1DL-150, CO-RD-B-260 |  |
| CO-RD-PV-270 |  | Fixing of Interlock Tiles for Sidewalks Pavement for External Road - 1 - 1 | 6d | 2027-05-08 | 2027-05-13 | ENG-MS-HS-A-10, PRO-R25-RD-DL-120, PRO-RD-1DL-140, CO-RD-PV-260 |  |
|  | TS | **Traffic Signs Boards and Roads Marking** |  | 2027-05-20 | 2027-05-23 |  |  |
| CO-RD-F-RM-230 |  | Application of Road Marking Works For Road Works for External Road - 1 - 1 | 2d | 2027-05-20 | 2027-05-22 | CO-RD-PV-270, ENG-MS-MRK-A-10, PRO-R25-RD-DL-150, ENG-SH-MRK-A-110, PRO-RD-1DL-170, CO-RD-PV-260, CON-RD-MR-250 |  |
| CO-RD-F-TS-170 |  | Installation Works of Traffic Signs Boards For Road Works for External Road - 1 - 1 | 1d | 2027-05-23 | 2027-05-23 | CO-RD-F-RM-230, ENG-MS-TSB-A-10, PRO-R25-RD-DL-140, ENG-SH-TSB-A-100, PRO-RD-1DL-160 |  |
|  | 4 | **External Road - 1 - 2** |  | 2026-04-18 | 2027-05-24 |  |  |
|  | EW | **Earthworks** |  | 2026-04-18 | 2027-01-25 |  |  |
|  | EW | **Earthworks** |  | 2026-04-18 | 2027-01-25 |  |  |
| CO-EW-280 |  | Excavation and Backfilling Works Upto Design Level for Earthworks for External Road - 1 - 2(Completed) | 53d | 2026-04-18 A | 2026-06-22 A | MS-CS-PS SS, MOB-30, MOB-20, MOB-80, MOB-40, MOB-50, MOB-60, MOB-10, MOB-70, PRE-CON-MDC-10, PRE-CON-MDC-20, PRE-CON-MDC-30, PRE-CON-MDC-40, PRE-CON-MDC-50, PRE-CON-MDC-60, PRE-CON-MDC-70, PRE-CON-MDC-80, MS-MM-100, MS-MM-130, MS-MM-140, MS-MM-150, CO-EW-250 SS | 100% |
| CO-EW-280_R |  | Excavation and Backfilling Works Upto Design Level for Earthworks for External Road - 1 - 2(Remaining) | 21d | 2026-09-26 A | 2027-01-25 | CO-EW-250_R, MS-CS-PS SS, MOB-30, MOB-20, MOB-80, MOB-40, MOB-50, MOB-60, MOB-10, MOB-70, PRE-CON-MDC-10, PRE-CON-MDC-20, PRE-CON-MDC-30, PRE-CON-MDC-40, PRE-CON-MDC-50, PRE-CON-MDC-60, PRE-CON-MDC-70, PRE-CON-MDC-80, MS-MM-100, MS-MM-130, MS-MM-140, MS-MM-150, CO-EW-250_R SS, CO-EW-280, CO-EW-210_R | 28% |
|  | RD | **Road Works** |  | 2027-04-04 | 2027-05-24 |  |  |
|  | 3 | **Road 01** |  | 2027-04-04 | 2027-05-24 |  |  |
|  | RD | **Pre-Bituminous Construction** |  | 2027-04-04 | 2027-04-17 |  |  |
| CO-RD-PB-300 |  | Subgrade Layer for Road Works for External Road - 1 - 2 | 6d | 2027-04-04 | 2027-04-10 | CO-EW-280_R, ENG-MS-RD-A-20, ENG-MS-RD-A-30, ENG-MS-RD-A-40, PRO-R25-RD-DL-100, ENG-MS-RD-A-10, ENG-SH-RD-A-100, ENG-SH-RD-A-110, MS-CS-RD SS, PRO-RD-1DL-100, MS-MM-130, MS-MM-140, CO-RD-PB-240 SS |  |
| CO-RD-PB-310 |  | Aggregate Base Course Layer for Road Works for External Road - 1 - 2 | 6d | 2027-04-11 | 2027-04-17 | CO-RD-PB-300, PRO-R25-RD-DL-110, PRO-RD-1DL-110 |  |
|  | 1 | **Bituminous Construction** |  | 2027-04-18 | 2027-04-29 |  |  |
| CO-RD-B-320 |  | Bituminous Base Courses Layers for Road Works for External Road - 1 - 2 | 7d | 2027-04-18 | 2027-04-25 | PRO-R25-RD-DL-160, PRO-R25-RD-DL-160 FF, CO-RD-PB-310 SS, CO-RD-PB-310, CO-RD-PB-310 FF, PRO-RD-1DL-120, PRO-RD-1DL-120 FF, PRO-R25-RD-DL-170, PRO-RD-1DL-130 |  |
| CON-RD-MR-310 |  | Preparation of Asphaltic Wearing Course Layer for Roads Network for External Road - 1 - 2 | 4d | 2027-04-26 | 2027-04-29 | PRO-RD-1DL-190, PRO-RD-1DL-190 FF, PRO-RD-DL-210, PRO-RD-DL-210 FF, CO-RD-B-320 SS, CO-RD-B-320, CO-RD-B-320 FF, PRO-RD-DL-200, PRO-RD-1DL-180 |  |
|  | LS | **Pavement Works** |  | 2027-04-27 | 2027-05-10 |  |  |
| CO-RD-PV-320 |  | Fixing of Curbstone for Sidewalks Pavement for External Road - 1 - 2 | 6d | 2027-04-27 | 2027-05-03 | ENG-MS-HS-A-10, PRO-R25-RD-DL-130, PRO-RD-1DL-150, CO-RD-B-320 |  |
| CO-RD-PV-330 |  | Fixing of Interlock Tiles for Sidewalks Pavement for External Road - 1 - 2 | 6d | 2027-05-04 | 2027-05-10 | CO-RD-PV-320, ENG-MS-HS-A-10, PRO-R25-RD-DL-120, PRO-RD-1DL-140 |  |
|  | TS | **Traffic Signs Boards and Roads Marking** |  | 2027-05-11 | 2027-05-24 |  |  |
| CO-RD-F-RM-260 |  | Application of Road Marking Works For Road Works for External Road - 1 - 2 | 4d | 2027-05-11 | 2027-05-20 | CO-RD-PV-330, ENG-MS-MRK-A-10, PRO-R25-RD-DL-150, ENG-SH-MRK-A-110, PRO-RD-1DL-170, CO-RD-PV-320, CON-RD-MR-310 |  |
| CO-RD-F-TS-200 |  | Installation Works of Traffic Signs Boards For Road Works for External Road - 1 - 2 | 3d | 2027-05-22 | 2027-05-24 | CO-RD-F-RM-260, ENG-MS-TSB-A-10, PRO-R25-RD-DL-140, ENG-SH-TSB-A-100, PRO-RD-1DL-160 |  |
|  | 1 | **External Road - 2** |  | 2026-05-09 | 2027-05-24 |  |  |

| ID | WBS | Task | Duration | Start | Finish | Predecessors | Complete |
| --- | --- | --- | --- | --- | --- | --- | --- |
|  | EW | **Earthworks** |  | 2026-05-09 | 2027-02-18 |  |  |
|  | EW | **Earthworks** |  | 2026-05-09 | 2027-02-18 |  |  |
| CO-EW-260 |  | Excavation and Backfilling Works Upto Design Level for Earthworks for External Road - 2(Completed) | 35d | 2026-05-09 A | 2026-06-22 A | MS-CS-PS SS, MOB-30, MOB-20, MOB-80, MOB-40, MOB-50, MOB-60, MOB-10, MOB-70, PRE-CON-MDC-10, PRE-CON-MDC-20, PRE-CON-MDC-30, PRE-CON-MDC-40, PRE-CON-MDC-50, PRE-CON-MDC-60, PRE-CON-MDC-70, PRE-CON-MDC-80, MS-MM-100, MS-MM-130, MS-MM-140, MS-MM-150 | 100% |
| CO-EW-260_R |  | Excavation and Backfilling Works Upto Design Level for Earthworks for External Road - 2(Remaining) | 21d | 2027-01-26 | 2027-02-18 | CO-EW-280_R, CO-EW-210_R01, MS-CS-PS SS, MOB-30, MOB-20, MOB-80, MOB-40, MOB-50, MOB-60, MOB-10, MOB-70, PRE-CON-MDC-10, PRE-CON-MDC-20, PRE-CON-MDC-30, PRE-CON-MDC-40, PRE-CON-MDC-50, PRE-CON-MDC-60, PRE-CON-MDC-70, PRE-CON-MDC-80, MS-MM-100, MS-MM-130, MS-MM-140, MS-MM-150, CO-EW-260, CO-EW-280, CO-EW-210_R |  |
|  | RD | **Road Works** |  | 2026-10-27 | 2027-05-24 |  |  |
|  | 3 | **Road 01** |  | 2026-10-27 | 2027-05-24 |  |  |
|  | RD | **Pre-Bituminous Construction** |  | 2026-10-27 | 2027-04-04 |  |  |
| CO-RD-PB-260 |  | Subgrade Layer for Road Works for External Road - 2 | 7d | 2026-10-27 A | 2027-04-04 | CO-EW-260_R SS, ENG-MS-RD-A-20, ENG-MS-RD-A-30, ENG-MS-RD-A-40, PRO-R25-RD-DL-100, ENG-MS-RD-A-10, ENG-SH-RD-A-100, ENG-SH-RD-A-110, MS-CS-RD SS, PRO-RD-1DL-100, MS-MM-130, MS-MM-140, CO-TE-CTV-TF-360 SS | 56% |
| CO-RD-PB-270 |  | Aggregate Base Course Layer for Road Works for External Road - 2 | 4d | 2026-10-28 A | 2027-04-04 | CO-RD-PB-260 FF, CO-RD-PB-260 SS, PRO-R25-RD-DL-110, PRO-RD-1DL-110 | 51% |
|  | 1 | **Bituminous Construction** |  | 2027-04-05 | 2027-04-27 |  |  |
| CO-RD-B-280 |  | Bituminous Base Courses Layers for Road Works for External Road - 2 | 10d | 2027-04-05 | 2027-04-15 | PRO-R25-RD-DL-160, PRO-R25-RD-DL-160 FF, CO-RD-PB-270 SS, CO-RD-PB-270, CO-RD-PB-270 FF, PRO-RD-1DL-120, PRO-RD-1DL-120 FF, PRO-R25-RD-DL-170, PRO-RD-1DL-130 |  |
| CON-RD-MR-270 |  | Preparation of Asphaltic Wearing Course Layer for Roads Network for External Road - 2 | 10d | 2027-04-17 | 2027-04-27 | PRO-RD-1DL-190, PRO-RD-1DL-190 FF, PRO-RD-DL-210, PRO-RD-DL-210 FF, CO-RD-B-280 SS, CO-RD-B-280, CO-RD-B-280 FF, PRO-RD-DL-200, PRO-RD-1DL-180 |  |
|  | LS | **Pavement Works** |  | 2027-04-27 | 2027-05-06 |  |  |
| CO-RD-PV-280 |  | Fixing of Curbstone for Sidewalks Pavement for External Road - 2 | 9d | 2027-04-27 | 2027-05-06 | ENG-MS-HS-A-10, PRO-R25-RD-DL-130, PRO-RD-1DL-150, CO-RD-B-280, CON-RD-MR-270 SS |  |
| CO-RD-PV-290 |  | Fixing of Interlock Tiles for Sidewalks Pavement for External Road - 2 | 9d | 2027-04-27 | 2027-05-06 | ENG-MS-HS-A-10, PRO-R25-RD-DL-120 SS, PRO-RD-1DL-140, CO-RD-PV-280 SS |  |
|  | TS | **Traffic Signs Boards and Roads Marking** |  | 2027-05-08 | 2027-05-24 |  |  |
| CO-RD-F-RM-240 |  | Application of Road Marking Works For Road Works for External Road - 2 | 10d | 2027-05-08 | 2027-05-24 | PRO-RD-1DL-190, PRO-RD-DL-210, CO-RD-B-280 SS, CO-RD-B-280, CO-RD-PV-290, ENG-MS-MRK-A-10, PRO-R25-RD-DL-150, ENG-SH-MRK-A-110, PRO-RD-1DL-170, CO-RD-PV-280, CON-RD-MR-270 |  |
| CO-RD-F-TS-180 |  | Installation Works of Traffic Signs Boards For Road Works for External Road - 2 | 2d | 2027-05-10 | 2027-05-11 | PRO-RD-1DL-190, PRO-RD-DL-210, CO-RD-B-280 SS, CO-RD-B-280, ENG-MS-TSB-A-10, PRO-R25-RD-DL-140, ENG-SH-TSB-A-100, PRO-RD-1DL-160, CON-RD-MR-270 |  |
|  | 3 | **External Road - 3** |  | 2026-05-09 | 2027-05-24 |  |  |
|  | EW | **Earthworks** |  | 2026-05-09 | 2027-02-27 |  |  |
|  | EW | **Earthworks** |  | 2026-05-09 | 2027-02-27 |  |  |
| CO-EW-270 |  | Excavation and Backfilling Works Upto Design Level for Earthworks for External Road - 3(Completed) | 35d | 2026-05-09 A | 2026-06-22 A | MS-CS-PS SS, MOB-30, MOB-20, MOB-80, MOB-40, MOB-50, MOB-60, MOB-10, MOB-70, PRE-CON-MDC-10, PRE-CON-MDC-20, PRE-CON-MDC-30, PRE-CON-MDC-40, PRE-CON-MDC-50, PRE-CON-MDC-60, PRE-CON-MDC-70, PRE-CON-MDC-80, MS-MM-100, MS-MM-130, MS-MM-140, MS-MM-150, CO-EW-260 SS | 100% |
| CO-EW-270_R |  | Excavation and Backfilling Works Upto Design Level for Earthworks for External Road - 3(Remaining) | 21d | 2026-08-23 A | 2027-02-27 | CO-EW-260_R, MS-CS-PS SS, MOB-30, MOB-20, MOB-80, MOB-40, MOB-50, MOB-60, MOB-10, MOB-70, PRE-CON-MDC-10, PRE-CON-MDC-20, PRE-CON-MDC-30, PRE-CON-MDC-40, PRE-CON-MDC-50, PRE-CON-MDC-60, PRE-CON-MDC-70, PRE-CON-MDC-80, MS-MM-100, MS-MM-130, MS-MM-140, MS-MM-150, CO-EW-260_R SS, CO-EW-270 | 68% |
|  | TE | **Telecom and Light Current Network** |  | 2027-02-09 | 2027-04-03 |  |  |
|  | PD | **Ducts Works** |  |  |  |  |  |
|  | MH | **Manholes Works** |  | 2027-02-09 | 2027-03-27 |  |  |
| CO-TE-MH-290 |  | Excavation Works for Manholes of Telecom Network for External Road - 3 | 18d | 2027-02-09 | 2027-03-01 | PRO-R25-TE-DL-100 SS, ENG-MT-TE-A-100, PRO-TE-1DL-100, ENG-SH-TE-A-110, ENG-MS-TE-A-110, ENG-MT-TE-A-110, PRO-TE-1DL-110, MS-CS-TE SS, MS-MM-130, MS-MM-140 |  |
| CO-TE-MH-300 |  | Installation Works for Manholes of Telecom Network for External Road - 3 | 19d | 2027-03-02 | 2027-03-27 | CO-TE-MH-290, PRO-R25-TE-DL-110 |  |
| CO-TE-MH-310 |  | Backfilling Works for Manholes of Telecom Network for External Road - 3 | 6d | 2027-03-21 | 2027-03-27 | CO-TE-MH-300 FF, CO-TE-MH-300 SS |  |
|  | 1 | **Testing and Finishes** |  | 2027-03-28 | 2027-04-03 |  |  |
| CO-TE-CTV-TF-360 |  | Testing and Interface modules with Telecom for External Road - 3 | 6d | 2027-03-28 | 2027-04-03 | PRO-R25-TE-DL-100 SS, ENG-SH-TE-A-110, ENG-MS-TE-A-110, ENG-MT-TE-A-100, PRO-TE-1DL-100, MS-CS-TE SS, MS-MM-130, MS-MM-140, CO-EW-270_R, CO-TE-MH-310 |  |
|  | RD | **Road Works** |  | 2026-09-08 | 2027-05-24 |  |  |
|  | 3 | **Road 01** |  | 2026-09-08 | 2027-05-24 |  |  |
|  | RD | **Pre-Bituminous Construction** |  | 2026-09-08 | 2027-04-12 |  |  |
| CO-RD-PB-280 |  | Subgrade Layer for Road Works for External Road - 3 | 6d | 2026-09-08 A | 2027-04-03 | PRO-R25-TE-DL-100 SS, ENG-SH-TE-A-110, ENG-MS-TE-A-110, ENG-MT-TE-A-100, PRO-TE-1DL-100, MS-CS-TE SS, CO-EW-270_R, ENG-MS-RD-A-20, ENG-MS-RD-A-30, ENG-MS-RD-A-40, PRO-R25-RD-DL-100, ENG-MS-RD-A-10, ENG-SH-RD-A-100, ENG-SH-RD-A-110, MS-CS-RD SS, PRO-RD-1DL-100, MS-MM-130, MS-MM-140, CO-RD-PB-260 SS, CO-TE-MH-310, CO-TE-CTV-TF-360 SS | 50% |
| CO-RD-PB-290 |  | Aggregate Base Course Layer for Road Works for External Road - 3 | 11d | 2026-10-19 A | 2027-04-12 | CO-RD-PB-280 SS, PRO-R25-RD-DL-110, PRO-RD-1DL-110, CO-RD-PB-270 SS | 32% |
|  | 1 | **Bituminous Construction** |  | 2027-04-17 | 2027-05-12 |  |  |
| CO-RD-B-300 |  | Bituminous Base Courses Layers for Road Works for External Road - 3 | 12d | 2027-04-17 | 2027-04-29 | PRO-R25-RD-DL-160, PRO-R25-RD-DL-160 FF, CO-RD-PB-290 SS, CO-RD-PB-290, CO-RD-PB-290 FF, PRO-RD-1DL-120, PRO-RD-1DL-120 FF, CO-RD-PB-270 SS, CO-RD-PB-270, CO-RD-PB-270 FF, PRO-R25-RD-DL-170, PRO-RD-1DL-130, CO-RD-B-280 |  |
| CON-RD-MR-290 |  | Preparation of Asphaltic Wearing Course Layer for Roads Network for External Road - 3 | 11d | 2027-05-01 | 2027-05-12 | PRO-RD-1DL-190, PRO-RD-1DL-190 FF, PRO-RD-DL-210, PRO-RD-DL-210 FF, CO-RD-B-300 SS, CO-RD-B-300, CO-RD-B-300 FF, CO-RD-B-280 SS, CO-RD-B-280, CO-RD-B-280 FF, PRO-RD-DL-200, PRO-RD-1DL-180, CON-RD-MR-270 |  |
|  | LS | **Pavement Works** |  | 2027-05-08 | 2027-05-10 |  |  |
| CO-RD-PV-300 |  | Fixing of Curbstone for Sidewalks Pavement for External Road - 3 | 3d | 2027-05-08 | 2027-05-10 | ENG-MS-HS-A-10, PRO-R25-RD-DL-130, PRO-RD-1DL-150, CO-RD-B-300, CO-RD-PV-280 |  |
| CO-RD-PV-310 |  | Fixing of Interlock Tiles for Sidewalks Pavement for External Road - 3 | 3d | 2027-05-08 | 2027-05-10 | CO-RD-PV-300 SS, ENG-MS-HS-A-10, PRO-R25-RD-DL-120, PRO-RD-1DL-140, CO-RD-PV-300 FF, CO-RD-PV-290 SS |  |
|  | TS | **Traffic Signs Boards and Roads Marking** |  | 2027-05-13 | 2027-05-24 |  |  |
| CO-RD-F-RM-250 |  | Application of Road Marking Works For Road Works for External Road - 3 | 5d | 2027-05-13 | 2027-05-24 | CO-RD-PV-310 SS, ENG-MS-MRK-A-10, PRO-R25-RD-DL-150, ENG-SH-MRK-A-110, PRO-RD-1DL-170, CO-RD-PV-300, CON-RD-MR-290, CO-RD-F-RM-240 SS |  |
| CO-RD-F-TS-190 |  | Installation Works of Traffic Signs Boards For Road Works for External Road - 3 | 3d | 2027-05-13 | 2027-05-22 | CO-RD-F-RM-250 SS, ENG-MS-TSB-A-10, PRO-R25-RD-DL-140, ENG-SH-TSB-A-100, PRO-RD-1DL-160, CO-RD-F-TS-180 |  |
|  | GEN | **Superstructure Work** |  | 2026-08-01 | 2027-06-30 |  |  |
|  | 4 | **Utility Buildings** |  | 2026-08-29 | 2027-06-30 |  |  |
|  | 4 | **Water Pump Station** |  | 2026-09-15 | 2027-06-30 |  |  |
|  | 1 | **Civil work** |  | 2026-09-15 | 2026-12-22 |  |  |
|  | 1 | **SubStructure** |  | 2026-09-15 | 2026-11-22 |  |  |
| CO-UB-PS-100 |  | Excavation Work for Water Pump station building | 8d | 2026-09-15 A | 2026-09-17 A | ENG-SH-LS-A-170, PRO-LS-CV-1DL-40, PRO-LS-CV-DL-50 | 100% |
| CO-UB-PS-110 |  | pouring P.C Conceret for Water Pump station building | 2d | 2026-09-19 A | 2026-09-20 A | CO-UB-PS-100 | 100% |
| CO-UB-PS-120 |  | Formwork for Foundation for Water Pump station building | 7d | 2026-09-26 A | 2026-09-27 A | CO-UB-PS-110 | 100% |
| CO-UB-PS-130 |  | Steel fixing for Foundation for Water Pump station building | 6d | 2026-09-27 A | 2026-09-28 A | CO-UB-PS-120 | 100% |
| CO-UB-PS-140 |  | pouring for Foundation for Water Pump station building | 1d | 2026-10-01 A | 2026-10-03 A | CO-UB-PS-130 | 100% |
| CO-UB-PS-150 |  | curing and deshuttering formwork Pump station building | 7d | 2026-10-06 A | 2026-10-10 A | CO-UB-PS-140 | 100% |
| CO-UB-PS-160 |  | Backfilling and compaction work for pump station | 4d | 2026-11-18 | 2026-11-22 | CO-UB-PS-150 |  |
|  | 2 | **Super structure** |  | 2026-10-06 | 2026-12-22 |  |  |
| CO-UB-PS-170 |  | Formwork for Wall and columns for Water Pump station building | 5d | 2026-10-06 A | 2026-10-08 A | CO-UB-PS-160 | 100% |
| CO-UB-PS-180 |  | Steel fixing for Wall columns | 4d | 2026-10-08 A | 2026-10-10 A | CO-UB-PS-170 | 100% |
| CO-UB-PS-190 |  | pouring for Wall columns | 1d | 2026-10-11 A | 2026-10-12 A | CO-UB-PS-180 | 100% |
| CO-UB-PS-200 |  | curing and deshuttering formwork for Wall columns | 7d | 2026-11-23 | 2026-11-30 | CO-UB-PS-190 |  |
| CO-UB-PS-210 |  | Waterproofing for Walls columns | 2d | 2026-12-01 | 2026-12-02 | CO-UB-PS-200 |  |
| CO-UB-PS-220 |  | Formwork for pump roof | 4d | 2026-12-03 | 2026-12-07 | CO-UB-PS-210 |  |
| CO-UB-PS-230 |  | Steel fixing for pump roof | 4d | 2026-12-08 | 2026-12-12 | CO-UB-PS-220 |  |
| CO-UB-PS-240 |  | pouring for pump roof | 2d | 2026-12-13 | 2026-12-14 | CO-UB-PS-230 |  |
| CO-UB-PS-250 |  | curing and deshuttering formwork for pump roof | 7d | 2026-12-15 | 2026-12-22 | CO-UB-PS-240 |  |
|  | 2 | **Architectural work** |  | 2026-12-23 | 2027-01-26 |  |  |
| CO-UB-PS-260 |  | Executing Masonry Works for Water Pump station building | 7d | 2026-12-23 | 2026-12-30 | CO-UB-PS-250 |  |
| CO-UB-PS-270 |  | Executing Plastering Works for Pump station building | 7d | 2026-12-31 | 2027-01-07 | CO-UB-PS-260 |  |

| ID | WBS | Task | Duration | Start | Finish | Predecessors | Complete |
| --- | --- | --- | --- | --- | --- | --- | --- |
| CO-UB-PS-280 |  | Executing Painting and Finishes Works for Pump station building | 8d | 2027-01-09 | 2027-01-17 | CO-UB-PS-270 |  |
| CO-UB-PS-320 |  | Doors and windows Fixing &Stair Tiles | 8d | 2027-01-18 | 2027-01-26 | CO-UB-PS-280 |  |
|  | 3 | **Electrical work** |  |  |  |  |  |
|  | 4 | **Mechanical work** |  | 2027-05-20 | 2027-06-30 |  |  |
| CO-UB-PS-340 |  | Executing HVAC System for Water Pump station building | 10d | 2027-05-20 | 2027-05-31 | CO-UB-PS-320, CO-UB-PS-280, PRO-SPS-LL-MSI-10, CO-UB-PS-270, PRO-LS-LL-MSI-20 |  |
| CO-UB-PS-360 |  | Executing Fire fighting institution works(piping and wire installation) for Water Pump station building | 10d | 2027-06-01 | 2027-06-12 | CO-UB-PS-270, CO-UB-PS-270 FF, CO-UB-PS-340, CO-UB-PS-340 FF, PRO-LS-LL-MSI-20 FF, CO-UB-PS-320, CO-UB-PS-320 FF, CO-UB-PS-280, CO-UB-PS-280 FF, PRO-LS-LL-MSI-20, MS-MO-20 |  |
| CO-UB-PS-380 |  | Executing Plummbing works for Water Pump station building | 10d | 2027-06-13 | 2027-06-23 | CO-UB-PS-360, CO-UB-PS-320, CO-UB-PS-360 FF, PRO-LS-LL-MSI-20, MS-MO-20 |  |
| CO-UB-PS-390 |  | Installation of pumps | 6d | 2027-06-24 | 2027-06-30 | CO-UB-PS-320, CO-UB-PS-280, CO-UB-PS-380, CO-UB-PS-340, PRO-LS-LL-MSI-20, MS-MO-20 |  |
|  | 3 | **Sewage Lift Station** |  | 2026-08-29 | 2027-02-04 |  |  |
|  | 1 | **Civil work** |  | 2026-08-29 | 2027-02-01 |  |  |
|  | 1 | **Sup Structure** |  | 2026-08-29 | 2026-10-10 |  |  |
| CO-UB-LS-220 |  | Excavation Work for Sewage Lift Station | 9d | 2026-08-29 A | 2026-08-31 A | PRO-SPS-CV-1DL-10, PRO-SPS-CV-DL-10, ENG-SH-SPS-A-160, CO-UB-PS-280 | 100% |
| CO-UB-LS-230 |  | pouring P.C Conceret for Sewage Lift Station | 2d | 2026-09-01 A | 2026-09-02 A | CO-UB-LS-220 | 100% |
| CO-UB-LS-240 |  | Formwork for Foundation for Sewage Lift Station | 12d | 2026-09-03 A | 2026-10-03 A | CO-UB-LS-230 | 100% |
| CO-UB-LS-250 |  | Steel fixing for Foundation for Sewage Lift Station | 10d | 2026-09-03 A | 2026-10-06 A | CO-UB-LS-240 | 100% |
| CO-UB-LS-260 |  | pouring for Foundationfor Sewage Lift Station | 2d | 2026-09-03 A | 2026-10-08 A | CO-UB-LS-250 | 100% |
| CO-UB-LS-270 |  | curing and deshuttering formwork for Sewage Lift Station | 7d | 2026-09-03 A | 2026-10-10 A | CO-UB-LS-260 | 100% |
| CO-UB-LS-280 |  | Backfilling and compaction work for Sewage Lift Station | 6d | 2026-09-03 A | 2026-10-10 A | CO-UB-LS-270 | 100% |
|  | 2 | **Super structure** |  | 2026-09-30 | 2027-02-01 |  |  |
| CO-UB-LS-290 |  | Formwork for Wall and columns for Sewage Lift Station | 10d | 2026-09-30 A | 2026-10-04 A | CO-UB-LS-280 | 100% |
| CO-UB-LS-300 |  | Steel fixing for Wall columns | 9d | 2026-10-05 A | 2026-10-06 A | CO-UB-LS-290 | 100% |
| CO-UB-LS-310 |  | pouring for Wall columns | 1d | 2026-10-07 A | 2026-10-08 A | CO-UB-LS-300 | 100% |
| CO-UB-LS-320 |  | curing and deshuttering formwork for Wall columns | 7d | 2026-10-11 A | 2026-10-12 A | CO-UB-LS-310 | 100% |
| CO-UB-LS-330 |  | Waterproofing for Walls columns | 4d | 2026-10-12 A | 2026-10-13 A | CO-UB-LS-320 | 100% |
| CO-UB-LS-340 |  | Formwork for pump roof | 6d | 2026-10-13 A | 2026-10-15 A | CO-UB-LS-330 | 100% |
| CO-UB-LS-350 |  | Steel fixing for pump roof | 6d | 2026-10-17 A | 2026-10-18 A | CO-UB-LS-340 | 100% |
| CO-UB-LS-360 |  | pouring for pump roof | 1d | 2026-10-18 A | 2027-01-18 | CO-UB-LS-350 | 90% |
| CO-UB-LS-370 |  | curing and deshuttering formwork for pump roof | 12d | 2027-01-19 | 2027-02-01 | CO-UB-LS-360 |  |
|  | 2 | **Architectural work** |  | 2027-02-02 | 2027-02-04 |  |  |
| CO-UB-LS-390 |  | Executing Plastering and Finishes Works for Sewage Lift Station | 3d | 2027-02-02 | 2027-02-04 | CO-UB-LS-370 |  |
|  | 3 | **Electrical work** |  |  |  |  |  |
|  | 4 | **Mechanical work** |  |  |  |  |  |
|  | 5 | **Potable Water Tank** |  | 2027-01-09 | 2027-04-11 |  |  |
|  | 1 | **Eearth Work** |  | 2027-01-09 | 2027-02-02 |  |  |
| CO-UB-PWT-100 |  | Excavation work for tank foundation tank formation level for Potable Water Tank | 12d | 2027-01-09 | 2027-01-21 | ENG-SH-ST-A-180, PRO-TSE-CV-1DL-50, PRO-TSE-CV-DL-60, CO-UB-PS-270 |  |
| CO-UB-PWT-110 |  | Soil replacement Up to tank formation level for Potable Water Tank | 10d | 2027-01-23 | 2027-02-02 | CO-UB-PWT-100 |  |
|  | 2 | **Structural Work** |  | 2027-02-03 | 2027-03-25 |  |  |
| CO-UB-PWT-120 |  | Plain Concrete works for Potable Water Tank | 7d | 2027-02-03 | 2027-02-10 | CO-UB-PWT-110 |  |
| CO-UB-PWT-130 |  | Form work for Tank Foundation for Potable Water Tank | 12d | 2027-02-11 | 2027-02-24 | CO-UB-PWT-120, CO-UB-PS-320 |  |
| CO-UB-PWT-140 |  | Steel Reinforcement work for Tank Foundation for Potable Water Tank | 12d | 2027-02-25 | 2027-03-14 | CO-UB-PWT-130 |  |
| CO-UB-PWT-150 |  | Casting concrete for Tank Foundation for Potable Water Tank | 10d | 2027-03-15 | 2027-03-25 | CO-UB-PWT-140 |  |
|  | 3 | **Tank Shell Erection&Roof Installation** |  | 2027-03-27 | 2027-04-11 |  |  |
| CO-UB-PWT-170 |  | shell erection for Potable Water Tank | 14d | 2027-03-27 | 2027-04-11 | CO-UB-PWT-150 |  |
|  | 4 | **Mechanical Work&Accessories** |  |  |  |  |  |
|  | 2 | **IrrigationTank** |  | 2027-01-23 | 2027-04-10 |  |  |
|  | 1 | **Eearth Work** |  | 2027-01-23 | 2027-02-16 |  |  |
| CO-UB-IRT-140 |  | Excavation work for tank foundation tank formation level for Irrigation Tank | 12d | 2027-01-23 | 2027-02-04 | CO-UB-PWT-100, ENG-SH-ST-A-180, PRO-TSE-CV-1DL-50, PRO-TSE-CV-DL-60 |  |
| CO-UB-IRT-150 |  | Soil replacement Up to tank formation level for Irrigation Tank | 10d | 2027-02-06 | 2027-02-16 | CO-UB-IRT-140 |  |
|  | 2 | **Structural Work** |  | 2027-02-17 | 2027-03-24 |  |  |
| CO-UB-IRT-160 |  | Plain Concrete works for Irrigation Tank | 3d | 2027-02-17 | 2027-02-20 | CO-UB-IRT-150 |  |
| CO-UB-IRT-170 |  | Form work for Tank Foundation for Irrigation Tank | 10d | 2027-02-21 | 2027-03-03 | CO-UB-IRT-160 |  |
| CO-UB-IRT-180 |  | Steel Reinforcement work for Tank Foundation for Irrigation Tank | 11d | 2027-03-04 | 2027-03-20 | CO-UB-IRT-170 |  |
| CO-UB-IRT-190 |  | Casting concrete for Tank Foundation for Irrigation Tank | 4d | 2027-03-21 | 2027-03-24 | CO-UB-IRT-180 |  |
|  | 3 | **Tank Shell Erection&Roof Installation** |  | 2027-03-25 | 2027-04-10 |  |  |
| CO-UB-IRT-210 |  | shell erection for Irrigation Tank | 14d | 2027-03-25 | 2027-04-10 | CO-UB-IRT-190 |  |
|  | 4 | **Mechanical Work&Accessories** |  |  |  |  |  |
|  | 1 | **Control Room** |  | 2026-10-03 | 2027-05-26 |  |  |
|  | 5 | **Civil Work** |  | 2026-10-03 | 2027-01-13 |  |  |
| CO-UB-CR-100 |  | Excavation Work For Control Room Foundation | 7d | 2026-10-03 A | 2026-10-04 A | ENG-SH-ST-A-190, PRO-TSE-CV-DL-70, PRO-TSE-CV-1DL-60 | 100% |
| CO-UB-CR-110 |  | Pouring for Plain Concrete | 5d | 2026-10-05 A | 2026-10-11 A | CO-UB-CR-100 | 100% |
| CO-UB-CR-120 |  | Pouring R.C Footing For Control Room | 21d | 2026-10-13 A | 2026-10-17 A | CO-UB-CR-110 | 100% |
| CO-UB-CR-130 |  | Pouring R.C Columns For Control Room | 12d | 2026-10-19 A | 2026-10-24 A | CO-UB-CR-120 | 100% |
| CO-UB-CR-140 |  | Pouring Beams and Slab For Control Room | 10d | 2026-10-25 A | 2027-01-13 | CO-UB-CR-130 | 5% |
|  | 6 | **Finishing Work** |  | 2027-01-27 | 2027-05-26 |  |  |
|  | 1 | **Architictural work** |  | 2027-01-27 | 2027-03-20 |  |  |
| CO-UB-CR-150 |  | Brick Work For Control Room | 10d | 2027-01-27 | 2027-02-07 | CO-UB-PS-320, CO-UB-CR-140 |  |
| CO-UB-CR-160 |  | Thermal & Moisture Protection Work for Control Room | 7d | 2027-02-08 | 2027-02-15 | CO-UB-CR-150 |  |
| CO-UB-CR-200 |  | Install For Curtian Wall and Windows and Doors | 7d | 2027-02-16 | 2027-02-23 | CO-UB-CR-160 |  |
| CO-UB-CR-240 |  | External Finshing Work (Walls and Floor) | 8d | 2027-02-24 | 2027-03-04 | CO-UB-CR-200 |  |
| CO-UB-CR-250 |  | Internal Finshing Work (Walls,Floor and Ceiling) | 10d | 2027-03-06 | 2027-03-20 | CO-UB-CR-240 |  |

| ID | WBS | Task | Duration | Start | Finish | Predecessors | Complete |
| --- | --- | --- | --- | --- | --- | --- | --- |
|  | 3 | **Mechanical Work** |  | 2027-02-08 | 2027-05-05 |  |  |
|  | 3 | **HVAC System** |  | 2027-02-08 | 2027-05-05 |  |  |
| CO-UB-CR-170 |  | Install of Refrigerant Piping ( fabricated metal ducts with flanges complete with supports, vanes, dampers ) | 21d | 2027-02-08 | 2027-03-03 | CO-UB-CR-150 |  |
| CO-UB-CR-260 |  | Install of Mini split actual and Ducted split | 20d | 2027-03-21 | 2027-04-12 | CO-UB-CR-250, CO-UB-CR-170 |  |
| CO-UB-CR-310 |  | Install of Air Grills 150mm x150mm and Air Diffuser 600mm x 600mm | 20d | 2027-04-13 | 2027-05-05 | CO-UB-CR-260, CO-UB-CR-170 |  |
|  | 4 | **Fire Fitting System** |  | 2027-03-04 | 2027-03-27 |  |  |
| CO-UB-CR-180 |  | Installation & Testing of 2 hours Fire rated system for closing the openings between rooms with help of Rock wool | 10d | 2027-03-04 | 2027-03-18 | CO-UB-CR-170 |  |
| CO-UB-CR-270 |  | Install Fire Extinguishers | 6d | 2027-03-21 | 2027-03-27 | CO-UB-CR-180, CO-UB-CR-250 |  |
|  | 1 | **Plumbing System** |  | 2027-03-21 | 2027-04-03 |  |  |
| CO-UB-CR-370 |  | Install of Sanitary Wares Including Relevant Pipes and Fittings | 12d | 2027-03-21 | 2027-04-03 | CO-UB-CR-180, CO-UB-CR-250 |  |
|  | 4 | **Electrical Work** |  | 2027-03-21 | 2027-05-13 |  |  |
|  | 1 | **LV Power** |  | 2027-03-21 | 2027-05-09 |  |  |
| CO-UB-CR-190 |  | Install of Distribution board For Control Room | 10d | 2027-03-21 | 2027-03-31 | CO-UB-CR-170, CO-UB-CR-150, CO-UB-CR-250 |  |
| CO-UB-CR-220 |  | Install of Earting Cable for Control Room | 14d | 2027-04-01 | 2027-04-17 | CO-UB-CR-190 |  |
| CO-UB-CR-280 |  | Install of Socket outlet and LED Lighting | 19d | 2027-04-18 | 2027-05-09 | CO-UB-CR-190, CO-UB-CR-250, CO-UB-CR-220 |  |
|  | 3 | **Fire Detection And Alarm System** |  | 2027-04-04 | 2027-05-13 |  |  |
| CO-UB-CR-210 |  | Install of 2C x 1.5 Sqm FR Rated Armored - Cable For Loop Wiring | 4d | 2027-04-04 | 2027-04-07 | CO-UB-CR-170, CO-UB-CR-180, CO-UB-CR-270, CO-UB-CR-370 |  |
| CO-UB-CR-230 |  | Install of Transmission Communication cable - Fiber Optics 12Core | 4d | 2027-04-08 | 2027-04-12 | CO-UB-CR-210 |  |
| CO-UB-CR-290 |  | Install of power supply system for fire alarm control panel | 4d | 2027-04-13 | 2027-04-17 | CO-UB-CR-230, CO-UB-CR-250 |  |
| CO-UB-CR-300 |  | Install of Fire Alarm Control panel | 6d | 2027-04-18 | 2027-04-24 | CO-UB-CR-250 FF, CO-UB-CR-210, CO-UB-CR-230, CO-UB-CR-290 |  |
| CO-UB-CR-320 |  | Installation of the addressable manual call point with operation safety glass breaking | 3d | 2027-04-25 | 2027-04-27 | CO-UB-CR-300, CO-UB-CR-250 |  |
| CO-UB-CR-330 |  | Install of the photoelectric heat & smoke detector | 5d | 2027-04-28 | 2027-05-03 | CO-UB-CR-320 |  |
| CO-UB-CR-340 |  | Install of Sounder With Beacon | 5d | 2027-05-04 | 2027-05-09 | CO-UB-CR-330 |  |
| CO-UB-CR-350 |  | Install of Addressable Control module | 4d | 2027-05-10 | 2027-05-13 | CO-UB-CR-340 |  |
|  | 2 | **Furnitures work** |  | 2027-05-20 | 2027-05-26 |  |  |
| CO-UB-CR-360 |  | Office Chairs,Tables and Stand | 6d | 2027-05-20 | 2027-05-26 | CO-UB-CR-350, CO-UB-CR-280, CO-UB-CR-270, CO-UB-CR-310, CO-UB-CR-370 |  |
|  | ML | **Softscape and Planting Works** |  | 2027-05-08 | 2027-06-22 |  |  |
| CO-LS-PL-160 |  | Planting Works: Planting including plants, forming planting beds, suitable soil, supports, and protection | 15d | 2027-05-08 | 2027-05-30 | PRO-R25-IR-DL-140, ENG-MS-HS-A-10, ENG-SH-HS-A-110, PRO-IR-1DL-140, CO-RD-PV-180 SS |  |
| CO-LS-SF-170 |  | Site Furnishings (Seating Bench,Stone Boulders and Gravel) | 20d | 2027-05-31 | 2027-06-22 | CO-LS-PL-160, PRO-R25-IR-DL-150, ENG-MS-HS-A-10, ENG-SH-HS-A-110, PRO-IR-1DL-150 |  |
|  | 6 | **Storm Drainage Ponds** |  | 2026-10-01 | 2027-05-12 |  |  |
| CO-SD-PO-100-P1 |  | Excavation & Filling Works - PART 1 for Storm Drainage Ponds | 7d | 2026-10-01 A | 2027-03-24 | MS-CS-SL10 FF, ENG-SH-DPO-A-120, ENG-MS-DPO-A-130, ENG-MT-DPO-CV-A-110, PRO-DPO-CV-1DL-10, PRO-DPO-CV-DL-10, MS-CS-SL10 SS, CO-SD-CB-210, CO-SW-MH-300 | 90% |
| CO-SD-PO-110-P1 |  | Finished Grouted Riprap - PART 1 for Storm Drainage Ponds | 8d | 2027-03-01 A | 2027-04-03 | CO-SD-PO-100-P1 | 90% |
| CO-SD-PO-100-P2 |  | Excavation & Filling Works - PART 2 for Storm Drainage Ponds | 17d | 2027-04-04 | 2027-04-22 | CO-SD-PO-100-P1, CO-SD-PO-110-P1 |  |
| CO-SD-PO-110-P2 |  | Finished Grouted Riprap - PART 2 for Storm Drainage Ponds | 17d | 2027-04-24 | 2027-05-12 | CO-SD-PO-100-P2, CO-SD-PO-110-P1 |  |
|  | 1 | **Boundary Fence and Gaurd Room** |  | 2026-08-01 | 2027-06-20 |  |  |
|  | 1 | **Gaurd Room Work** |  | 2027-04-25 | 2027-06-20 |  |  |
|  | 1 | **Civil Work** |  | 2027-04-25 | 2027-05-11 |  |  |
| A1000 |  | Excavation Work For Guard Room Foundation | 5d | 2027-04-25 | 2027-04-29 | MS-CS-TSE10 FF, MS-CF-MOB, ENG-SH-GR-A-190, ENG-MS-GR-A-210, PRO-GR-CV-1DL-60, MS-CS-TSE10 SS, CO-RD-PB-140 SS |  |
| A1010 |  | Pouring for Plain Concrete for Guard Room | 1d | 2027-05-01 | 2027-05-01 | A1000, PRO-GR-CV-DL-70 |  |
| A1020 |  | Pouring R.C Footing for Guard Room | 3d | 2027-05-02 | 2027-05-04 | A1010 |  |
| A1030 |  | Pouring R.C Columns for Guard Room | 3d | 2027-05-05 | 2027-05-08 | A1020 |  |
| A1040 |  | Pouring Beams and Slab for Guard Room | 3d | 2027-05-09 | 2027-05-11 | A1030 |  |
|  | 2 | **Finishing Work** |  | 2027-05-12 | 2027-06-20 |  |  |
|  | 1 | **Architectural work** |  | 2027-05-12 | 2027-06-17 |  |  |
| A1050 |  | Brick Works for Architectural Works for Guard Rooms | 6d | 2027-05-12 | 2027-05-24 | A1040 |  |
| A1060 |  | Thermal & Moisture Protection Work for Architectural Works for Guard Rooms | 5d | 2027-05-25 | 2027-05-30 | A1050 |  |
| A1080 |  | External Finshing Work (Walls and Floor) for Architectural Works for Guard Rooms | 2d | 2027-06-06 | 2027-06-07 | A1110, A1140, A1220, A1250, A1340, A1200, A1060, A1050 |  |
| A1090 |  | Internal Finshing Work (Walls,Floor and Ceiling) for Architectural Works for Guard Rooms | 6d | 2027-06-06 | 2027-06-12 | A1110, A1140, A1220, A1250, A1340, A1200, A1060, A1050 |  |
| A1070 |  | Installation of Windows and Doors for Architectural Works for Guard Rooms | 5d | 2027-06-13 | 2027-06-17 | A1080, A1090 |  |
|  | 3 | **Mechanical Work** |  | 2027-05-31 | 2027-06-08 |  |  |
|  | 1 | **Drainage System** |  | 2027-05-31 | 2027-06-08 |  |  |
| A1110 |  | Installation of Sewage Piping System complete with joints, angles, reducer etc. for Drainage System for Guard Rooms | 4d | 2027-05-31 | 2027-06-03 | A1050, A1060 |  |
| A1120 |  | Installation of all Sanitary Ware for Drainage System for Guard Rooms | 4d | 2027-06-05 | 2027-06-08 | A1110 |  |
|  | 2 | **Water Supply System** |  | 2027-05-31 | 2027-06-08 |  |  |
| A1140 |  | Installation of Water Piping System complete with joints, angles, reducer etc. for Water Supply System for Guard Rooms | 3d | 2027-05-31 | 2027-06-02 | A1050, A1060 |  |
| A1180 |  | Installation oF Water Supply Wares (Water Heater, Faucets, Etc..) for Water Supply System for Guard Rooms | 2d | 2027-06-03 | 2027-06-05 | A1140 |  |
| A1240 |  | Installation of water tanks for Water Supply System for Guard Rooms | 1d | 2027-06-08 | 2027-06-08 | A1180, A1080 |  |
|  | 3 | **HVAC System** |  | 2027-05-31 | 2027-06-02 |  |  |
| A1200 |  | Installation of AC Piping for HVAC System for Guard Rooms | 2d | 2027-05-31 | 2027-06-01 | A1050, A1060 |  |
| A1190 |  | Installation of AC Units for HVAC System for Guard Rooms | 1d | 2027-06-02 | 2027-06-02 | A1200 |  |
|  | 4 | **Fire Fighting System** |  | 2027-05-31 | 2027-06-02 |  |  |
| A1220 |  | Installation & Testing of 2 hours Fire Fighting system for Fire Fighting System for Guard Rooms | 2d | 2027-05-31 | 2027-06-01 | A1060, A1050 |  |
| A1230 |  | Installation of Fire Extinguishers for Fire Fighting System for Guard Rooms | 1d | 2027-06-02 | 2027-06-02 | A1220 |  |
|  | 4 | **Electrical Work** |  | 2027-05-31 | 2027-06-12 |  |  |
|  | 1 | **LV Power** |  | 2027-05-31 | 2027-06-09 |  |  |
| A1250 |  | Installation of Conduits and Cables for LV System for Gaurd Rooms | 5d | 2027-05-31 | 2027-06-05 | A1050, A1060 |  |
| A1260 |  | Install of Eletrical Finishes (DBs, Sockets and Lightings) and Termination for LV System for Gaurd Rooms | 4d | 2027-06-06 | 2027-06-09 | A1250 |  |
|  | 3 | **Fire Detection And Alarm System** |  | 2027-05-31 | 2027-06-12 |  |  |
| A1340 |  | Installation of Conduits and Cables for Fire Alarm System for Gaurd Rooms | 5d | 2027-05-31 | 2027-06-05 | A1060, A1050 |  |
| A1350 |  | Installation of Fire Alarm Devices (AMCP, SD,HD, Sounder and Panels) for Fire Alarm System for Gaurd Rooms | 6d | 2027-06-06 | 2027-06-12 | A1340 |  |

| ID | WBS | Task | Duration | Start | Finish | Predecessors | Complete |
| --- | --- | --- | --- | --- | --- | --- | --- |
|  | 2 | **Security System** |  |  |  |  |  |
|  | 2 | **Furniture work** |  | 2027-06-19 | 2027-06-20 |  |  |
| A1100 |  | Office Chairs,Tables and Stand | 2d | 2027-06-19 | 2027-06-20 | A1060, A1050, A1230, A1180, A1070, A1120, A1190, A1260, A1350 |  |
|  | 3 | **Boundary Fence** |  | 2026-08-01 | 2027-06-09 |  |  |
|  | 2 | **Boundary Fence - South** |  | 2026-08-01 | 2027-04-19 |  |  |
|  | 1 | **Civil Work** |  | 2026-08-01 | 2027-01-16 |  |  |
| CO-SU-FE-N-CI-100 |  | Excavation Work For Boundary Fence South | 16d | 2026-08-01 A | 2026-08-03 A | MS-CS-LV10 FF, ENG-SH-GR-A-200, ENG-MS-GR-A-220, PRO-FE-CV-1DL-70, MS-CS-LV10 SS, CO-EW-240, CO-EW-200, CO-EW-230, CO-EW-220 | 100% |
| CO-SU-FE-N-CI-110 |  | Pouring for Plain Concrete For Boundary Fence South | 14d | 2026-08-08 A | 2026-08-13 A | CO-SU-FE-N-CI-100, PRO-FE-CV-DL-80 FF | 100% |
| CO-SU-FE-N-CI-120 |  | Pouring R.C Footing For Boundary Fence South | 12d | 2026-08-15 A | 2026-08-22 A | CO-SU-FE-N-CI-110 | 100% |
| CO-SU-FE-N-CI-130 |  | Pouring R.C Columns For Boundary Fence South | 16d | 2026-09-26 A | 2027-01-03 | CO-SU-FE-N-CI-120 | 10% |
| CO-SU-FE-N-CI-140 |  | Pouring Beams For Boundary Fence South | 12d | 2027-01-03 | 2027-01-16 | CO-SU-FE-N-CI-130 |  |
|  | 5 | **Finishing Work** |  | 2026-10-13 | 2027-04-19 |  |  |
|  | 4 | **Architictural work** |  | 2026-10-13 | 2027-03-25 |  |  |
| CO-SU-FE-N-AR-100 |  | Install Brick Work For Boundary Fence South | 19d | 2026-10-13 A | 2027-02-07 | CO-SU-FE-N-CI-140 | 20% |
| CO-SU-FE-N-AR-110 |  | Insulation For Boundary Fence South | 15d | 2027-02-23 | 2027-03-15 | CO-SU-FE-N-AR-100, CO-SU-FE-N-EL-240 |  |
| CO-SU-FE-N-AR-120 |  | Install all the Relevant Cladding and Finishes For Boundary Fence South | 9d | 2027-03-16 | 2027-03-25 | CO-SU-FE-N-AR-110 |  |
|  | 3 | **Electrical Work** |  | 2027-02-08 | 2027-04-19 |  |  |
| CO-SU-FE-N-EL-240 |  | Installation of Conduits and Cables for Electricial Works For Boundary Fence South | 13d | 2027-02-08 | 2027-02-22 | CO-SU-FE-N-AR-100 |  |
| CO-SU-FE-N-EL-250 |  | Install, fixings, testing of all electrical finishes and lightings for Electricial Works For Boundary Fence South | 21d | 2027-03-27 | 2027-04-19 | CO-SU-FE-N-EL-240, CO-SU-FE-N-AR-120 |  |
|  | 1 | **Boundary Fence - West** |  | 2026-08-01 | 2027-04-29 |  |  |
|  | 1 | **Civil Work** |  | 2026-08-01 | 2026-10-18 |  |  |
| CO-SU-FE-N-CI-150 |  | Excavation Work For Boundary Fence West | 16d | 2026-08-01 A | 2026-08-04 A | ENG-SH-GR-A-200, ENG-MS-GR-A-220, PRO-FE-CV-1DL-70, MS-CS-LV10 SS, CO-EW-240, CO-EW-200, CO-EW-230, CO-EW-220, CO-EW-210_R, CO-SU-FE-N-CI-100 | 100% |
| CO-SU-FE-N-CI-160 |  | Pouring for Plain Concrete For Boundary Fence West | 13d | 2026-08-05 A | 2026-08-10 A | CO-SU-FE-N-CI-150, PRO-FE-CV-DL-80 FF, CO-SU-FE-N-CI-110 | 100% |
| CO-SU-FE-N-CI-170 |  | Pouring R.C Footing For Boundary Fence West | 16d | 2026-08-11 A | 2026-08-19 A | CO-SU-FE-N-CI-160, CO-SU-FE-N-CI-120 | 100% |
| CO-SU-FE-N-CI-180 |  | Pouring R.C Columns For Boundary Fence West | 16d | 2026-09-26 A | 2026-10-12 A | CO-SU-FE-N-CI-170, CO-SU-FE-N-CI-130 | 100% |
| CO-SU-FE-N-CI-190 |  | Pouring Beams For Boundary Fence West | 12d | 2026-10-12 A | 2026-10-18 A | CO-SU-FE-N-CI-180, CO-SU-FE-N-CI-140 | 100% |
|  | 5 | **Finishing Work** |  | 2026-10-01 | 2027-04-29 |  |  |
|  | 4 | **Architictural work** |  | 2026-10-01 | 2027-04-12 |  |  |
| CO-SU-FE-N-AR-130 |  | Install Brick Work For Boundary Fence West | 16d | 2026-10-01 A | 2027-02-18 | CO-SU-FE-N-CI-190, CO-SU-FE-N-AR-100 | 95% |
| CO-SU-FE-N-AR-140 |  | Insulation For Boundary Fence West | 12d | 2026-10-13 A | 2027-03-29 | CO-SU-FE-N-AR-130, CO-SU-FE-N-EL-260, CO-SU-FE-N-AR-110 | 40% |
| CO-SU-FE-N-AR-150 |  | Install all the Relevant Cladding and Finishes For Boundary Fence West | 12d | 2027-03-30 | 2027-04-12 | CO-SU-FE-N-AR-140, CO-SU-FE-N-AR-120 |  |
|  | 3 | **Electrical Work** |  | 2027-02-23 | 2027-04-29 |  |  |
| CO-SU-FE-N-EL-260 |  | Installation of Conduits and Cables for Electricial Works For Boundary Fence West | 8d | 2027-02-23 | 2027-03-03 | CO-SU-FE-N-AR-130, CO-SU-FE-N-EL-240 |  |
| CO-SU-FE-N-EL-270 |  | Install, fixings, testing of all electrical finishes and lightings for Electricial Works For Boundary Fence West | 9d | 2027-04-20 | 2027-04-29 | CO-SU-FE-N-EL-260, CO-SU-FE-N-AR-150, CO-SU-FE-N-EL-250 |  |
|  | 3 | **Boundary Fence - North** |  | 2026-08-01 | 2027-04-26 |  |  |
|  | 1 | **Civil Work** |  | 2026-08-01 | 2027-01-30 |  |  |
| CO-SU-FE-N-CI-200 |  | Excavation Work For Boundary Fence North | 16d | 2026-08-01 A | 2026-08-04 A | ENG-SH-GR-A-200, ENG-MS-GR-A-220, PRO-FE-CV-1DL-70, MS-CS-LV10 SS, CO-EW-240, CO-EW-200, CO-EW-230, CO-EW-220, CO-EW-210_R, CO-SU-FE-N-CI-150 | 100% |
| CO-SU-FE-N-CI-210 |  | Pouring for Plain Concrete For Boundary Fence North | 13d | 2026-08-05 A | 2026-08-11 A | CO-SU-FE-N-CI-200, PRO-FE-CV-DL-80 FF, CO-SU-FE-N-CI-160 | 100% |
| CO-SU-FE-N-CI-220 |  | Pouring R.C Footing For Boundary Fence North | 16d | 2026-08-11 A | 2026-09-02 A | CO-SU-FE-N-CI-210, CO-SU-FE-N-CI-170 | 100% |
| CO-SU-FE-N-CI-230 |  | Pouring R.C Columns For Boundary Fence North | 16d | 2026-09-26 A | 2026-10-12 A | CO-SU-FE-N-CI-220, CO-SU-FE-N-CI-180 | 100% |
| CO-SU-FE-N-CI-240 |  | Pouring Beams For Boundary Fence North | 12d | 2027-01-17 | 2027-01-30 | CO-SU-FE-N-CI-230, CO-SU-FE-N-CI-190 |  |
|  | 5 | **Finishing Work** |  | 2026-10-01 | 2027-04-26 |  |  |
|  | 4 | **Architictural work** |  | 2026-10-01 | 2027-04-19 |  |  |
| CO-SU-FE-N-AR-160 |  | Install Brick Work For Boundary Fence North | 14d | 2026-10-01 A | 2027-02-27 | CO-SU-FE-N-CI-240, CO-SU-FE-N-AR-130 | 95% |
| CO-SU-FE-N-AR-180 |  | Install all the Relevant Cladding and Finishes For Boundary Fence North | 6d | 2026-10-11 A | 2027-04-19 | CO-SU-FE-N-AR-170, CO-SU-FE-N-AR-150 | 20% |
| CO-SU-FE-N-AR-170 |  | Insulation For Boundary Fence North | 11d | 2027-03-30 | 2027-04-11 | CO-SU-FE-N-AR-160, CO-SU-FE-N-EL-280, CO-SU-FE-N-AR-140 |  |
|  | 3 | **Electrical Work** |  | 2027-03-04 | 2027-04-26 |  |  |
| CO-SU-FE-N-EL-280 |  | Installation of Conduits and Cables for Electricial Works For Boundary Fence North | 7d | 2027-03-04 | 2027-03-15 | CO-SU-FE-N-AR-160, CO-SU-FE-N-EL-260 |  |
| CO-SU-FE-N-EL-290 |  | Install, fixings, testing of all electrical finishes and lightings for Electricial Works For Boundary Fence North | 6d | 2027-04-20 | 2027-04-26 | CO-SU-FE-N-EL-280, CO-SU-FE-N-AR-180, CO-SU-FE-N-EL-270 SS |  |
|  | 4 | **Boundary Fence - East** |  | 2026-09-06 | 2027-06-09 |  |  |
|  | 1 | **Civil Work** |  | 2026-09-06 | 2027-02-10 |  |  |
| CO-SU-FE-N-CI-260 |  | Pouring for Plain Concrete For Boundary Fence East | 13d | 2026-09-06 A | 2026-09-20 A | CO-SU-FE-N-CI-250, PRO-FE-CV-DL-80 FF, CO-SU-FE-N-CI-210 | 100% |
| CO-SU-FE-N-CI-270 |  | Pouring R.C Footing For Boundary Fence East | 16d | 2026-09-21 A | 2026-10-12 A | CO-SU-FE-N-CI-260, CO-SU-FE-N-CI-220 | 100% |
| CO-SU-FE-N-CI-280 |  | Pouring R.C Columns For Boundary Fence East | 16d | 2026-09-26 A | 2027-01-23 | CO-SU-FE-N-CI-270, CO-SU-FE-N-CI-230 | 65% |
| CO-SU-FE-N-CI-250 |  | Excavation Work For Boundary Fence East | 16d | 2026-12-19 A | 2026-12-19 A | ENG-SH-GR-A-200, ENG-MS-GR-A-220, PRO-FE-CV-1DL-70, MS-CS-LV10 SS, CO-EW-240, CO-EW-200, CO-EW-230, CO-EW-220, CO-EW-250_R, CO-EW-210_R, CO-SU-FE-N-CI-200 | 100% |
| CO-SU-FE-N-CI-290 |  | Pouring Beams For Boundary Fence East | 10d | 2027-01-31 | 2027-02-10 | CO-SU-FE-N-CI-280, CO-SU-FE-N-CI-240 |  |
|  | 5 | **Finishing Work** |  | 2026-10-01 | 2027-06-09 |  |  |
|  | 4 | **Architictural work** |  | 2026-10-01 | 2027-06-03 |  |  |
| CO-SU-FE-N-AR-200 |  | Insulation For Boundary Fence East | 8d | 2026-10-01 A | 2026-10-12 A | CO-SU-FE-N-AR-190, CO-SU-FE-N-EL-300, CO-SU-FE-N-AR-170 | 100% |
| CO-SU-FE-N-AR-190 |  | Install Brick Work For Boundary Fence East | 11d | 2026-10-08 A | 2027-05-06 | MS-CF-MV, CO-SU-FE-N-CI-290, CO-SU-FE-N-AR-160 | 40% |
| CO-SU-FE-N-AR-210 |  | Install all the Relevant Cladding and Finishes For Boundary Fence East | 9d | 2027-05-25 | 2027-06-03 | CO-SU-FE-N-AR-200, CO-SU-FE-N-AR-180 |  |
|  | 3 | **Electrical Work** |  | 2027-05-08 | 2027-06-09 |  |  |
| CO-SU-FE-N-EL-300 |  | Installation of Conduits and Cables for Electricial Works For Boundary Fence East | 10d | 2027-05-08 | 2027-05-24 | CO-SU-FE-N-AR-190, CO-SU-FE-N-EL-280 |  |
| CO-SU-FE-N-EL-310 |  | Install, fixings, testing of all electrical finishes and lightings for Electricial Works For Boundary Fence East | 5d | 2027-06-05 | 2027-06-09 | CO-SU-FE-N-EL-300, CO-SU-FE-N-AR-210, CO-SU-FE-N-EL-290 |  |
|  | TC | **Testing and Comissioning** |  | 2027-06-21 | 2027-07-19 |  |  |
|  | INF | **Infrastructure Networks** |  | 2027-06-26 | 2027-07-14 |  |  |
|  | LV | **Low Voltage Network** |  | 2027-07-01 | 2027-07-14 |  |  |
| TC-LV-100 |  | Testing and Commissioning of Low Voltage Network | 12d | 2027-07-01 | 2027-07-14 | CO-PW-FH-220, CO-PW-FH-220 FF, CO-TE-MH-220, CO-TE-MH-220 FF, CON-LV-DP-180 FF, CON-LV-DP-190, CON-LV-DP-110, CO-RD-PB-150 SS, CO-IR-TF-210, CO-IR-TF-210 FF, CO-TE-CTV-210, CO-TE-CTV-210 FF, CO-EW-230, CO-EW-230 FF, CO-SD-ML-220, CO-SD-ML-220 FF, CO-PW-ML-220, CO-PW-ML-220 FF, CO-PW-VC-310, CO-PW-VC-310 FF, CO-TSE-ML-330, CO-TSE-ML-330 FF, CO-MV-ML-360, CO-MV-ML-360 FF, CO-SL-LP-480, CO-SL-LP-480 FF, CO-SL-CL-360, CO-SL-CL-360 FF, CON-LV-HC-210 FF, CON-LV-ML-210 FF, CO-TE-DW-240, CO-TE-DW-240 FF, CO-PW-FH-250, CO-PW-FH-250 FF, CO-TE-MH-250, CO-TE-MH-250 FF, CO-RD-PB-140, CO-RD-PB-140 FF, CO-IR-ML-380, CO-IR-ML-380 FF, CO-SD-MH-220, CO-SD-MH-220 FF, PRO-SD-1DL-100, PRO-SD-1DL-100 FF, CO-SD-MH-200, CO-SD-MH-200 FF, PRO-R25-SD-DL-100, PRO-R25-SD-DL-100 FF, CO-SD-MH-190, CO-SD-MH-190 FF, ENG-MT-SD-ML-A-100, ENG-MT-SD-ML-A-100 FF, MS-CS-SD SS, ENG-MS-SD-ML-A-110, ENG-MS-SD-ML-A-110 FF, ENG-MT-SD-ML-A-110, ENG-MT-SD-ML-A-110 FF, ENG-SH-SD-ML-A-110, ENG-SH-SD-ML-A-110 FF, CO-SD-MH-180, CO-SD-MH-180 FF, CO-SD-ML-130, CO-SD-ML-130 FF, PRO-R25-SD-DL-110, PRO-R25-SD-DL-110 FF, PRO-R25-SD-DL-130, PRO-R25-SD-DL-130 FF, PRO-SD-1DL-130, PRO-SD-1DL-130 FF, PRO-SD-1DL-120, PRO-SD-1DL-120 FF, ENG-MT-SD-CB-A-110, ENG-MT-SD-CB-A-110 FF, ENG-SH-SD-CB-A-110, ENG-SH-SD-CB-A-110 FF, ENG-MS-SD-CB-A-110, ENG-MS-SD-CB-A-110 FF, PRO-SW-1DL-110 SS, ENG-MT-SW-ML-A-100, ENG-MT-SW-ML-A-100 FF, ENG-SH-SW-ML-A-110, ENG-SH-SW-ML-A-110 FF, MS-CS-SW SS, ENG-MS-SW-ML-A-110, ENG-MS-SW-ML-A-110 FF, PRO-SW-1DL-100, PRO-SW-1DL-100 FF, ENG-MT-SW-ML-A-110, ENG-MT-SW-ML-A-110 FF, PRO-LV-DP-1DL-100 FF, PRO-LV-DP-DL-100 FF, CON-LV-DP-120 FF, CON-LV-DP-190 FF, CON-LV-DP-110 FF, ENG-SH-MSN-A-120, ENG-SH-MSN-A-120 FF, ENG-SH-CTV-A-110, ENG-SH-CTV-A-110 FF, ENG-MS-CTV-A-110, ENG-MS-CTV-A-110 FF, ENG-MT-CTV-A-100, ENG-MT-CTV-A-100 FF, PRO-CTV-1DL-100, PRO-CTV-1DL-100 FF, MS-CS-TE SS, CO-MV-TF-250, CO-TE-MH-160, CO-TE-MH-160 FF, CO-TE-CTV-110, CO-TE-CTV-110 FF, T/C-IR FF, MS-CF-LO, CON-RD-MR-150, CON-LV-ML-120, CON-LV-TT-100, CON-LV-TT-110, CON-LV-ES-100, CO-RD-PB-150, CON-LV-HC-120, CON-LV-DP-120, CON-LV-ML-150, CON-LV-TT-120, CON-LV-HC-150, CON-LV-ML-180, CON-LV-TT-140, CON-LV-TT-150, CON-LV-ES-120, CON-LV-HC-180, CON-LV-DP-180, CON-LV-ML-210, CON-LV-TT-160, CON-LV-HC-210, CON-RD-MR-230, CON-LV-ML-240, CON-LV-TT-180, CON-LV-TT-190, CON-LV-ES-140, CO-RD-PB-230, CON-LV-HC-240, CON-LV-DP-240, CON-RD-MR-250, CO-RD-PB-250, CON-RD-MR-270, CO-RD-PB-270, CON-RD-MR-290, CO-RD-PB-290, CON-RD-MR-310, CO-RD-PB-310, PRO-LV-DP-1DL-100, PRO-LV-DP-DL-100, CON-LV-DP-130, PRO-R25-RD-DL-170, PRO-RD-1DL-130, PRO-R25-RD-DL-100, PRO-RD-1DL-100, MS-MM-140, MS-MM-130, MS-CS-RD SS, ENG-SH-RD-A-100, ENG-SH-RD-A-110, ENG-MS-RD-A-30, ENG-MS-RD-A-20, ENG-MS-RD-A-10, ENG-MS-RD-A-40, CO-TE-MH-190, CO-TE-DW-160, CO-SL-CL-300, CO-SL-LP-380, CO-MV-ML-300, CO-IR-ML-180, CO-PW-FH-190, CO-PW-VC-250, CO-PW-ML-160, CO-TSE-ML-230, CO-SW-ML-160, CO-SW-MH-250, CO-SD-CB-200, CO-SD-ML-160, CO-SD-MH-260, CO-EW-210_R, CO-SL-LP-520, PRO-LV-TT-1DL-100, PRO-LV-TT-DL-100, CO-MV-TF-230, PRO-LV-DP-1DL-110, PRO-LV-DP-DL-120, PRO-R25-RD-DL-110, PRO-R25-RD-DL-110 FF, PRO-RD-1DL-110, PRO-RD-1DL-110 FF, CO-EW-220, CO-EW-220 FF, CO-SD-ML-190, CO-SD-ML-190 FF, CO-SD-MH-300, CO-SD-MH-300 FF, CO-SD-CB-230, CO-SD-CB-230 FF, CO-SW-ML-190, CO-SW-ML-190 FF, CO-SW-MH-300, CO-SW-MH-300 FF, CO-PW-ML-190, CO-PW-ML-190 FF, CO-PW-VC-280, CO-PW-VC-280 FF, CO-IR-ML-230, CO-IR-ML-230 FF, CO-TSE-ML-280, CO-TSE-ML-280 FF, CO-MV-ML-330, CO-MV-ML-330 FF, CO-SL-LP-430, CO-SL-LP-430 FF, CO-SL-CL-330, CO-SL-CL-330 FF, ENG-MS-RD-A-20 FF, ENG-MS-RD-A-30 FF, ENG-MS-RD-A-40 FF, PRO-R25-RD-DL-100 FF, CON-LV-HC-180 FF, CON-LV-ML-180 FF, ENG-MS-RD-A-10 FF, ENG-SH-RD-A-100 FF, ENG-SH-RD-A-110 FF, PRO-RD-1DL-100 FF, MS-MM-130 FF, MS-MM-140 FF, CO-TE-DW-200, CO-TE-DW-200 FF |  |
|  | PW1 | **Irrigation Network** |  | 2027-07-01 | 2027-07-14 |  |  |
| T/C-IR |  | Testing and Commissioning of Irrigation Network | 12d | 2027-07-01 | 2027-07-14 | CO-PW-FH-220, CO-TE-MH-220, CON-LV-DP-180, CO-PW-TF-110, CO-PW-TF-130, ENG-MT-IR-ML-A-110, PRO-IR-1DL-110, PRO-R25-IR-DL-110, PRO-IR-1DL-100, CO-PW-ML-110, PRO-R25-IR-DL-100, ENG-SH-IR-ML-A-110, ENG-MS-IR-ML-A-110, ENG-MT-IR-ML-A-100, CO-PW-ML-100, MS-CS-IR SS, CO-EW-200, CO-IR-ML-190, CO-IR-ML-170, CO-IR-ML-160, CO-EW-240, CO-IR-ML-150, CO-SW-MH-240, CO-SW-MH-230, PRO-SW-1DL-110, PRO-R25-SW-DL-110, CO-SW-MH-220, ENG-MT-SW-ML-A-100, ENG-SH-SW-ML-A-110, MS-CS-SW SS, ENG-MS-SW-ML-A-110, CO-SD-MH-380, CO-SD-ML-250, CO-SW-MH-210, PRO-R25-SD-DL-110, PRO-R25-SD-DL-130, PRO-SD-1DL-130, PRO-SD-1DL-120, CO-SD-CB-190, ENG-MT-SD-CB-A-110, ENG-SH-SD-CB-A-110, ENG-MS-SD-CB-A-110, MS-CS-SD SS, CO-SD-CB-180, PRO-SW-1DL-100, PRO-R25-SW-DL-100, CO-SW-ML-150, ENG-MT-SW-ML-A-110, CO-SW-ML-140, CO-RD-PB-150 SS, CO-TE-CTV-210, CO-EW-230, CO-SD-ML-220, CO-PW-ML-220, CO-PW-VC-310, CO-TSE-ML-330, CO-MV-ML-360, CO-SL-LP-480, CO-SL-CL-360, CON-LV-HC-210, CON-LV-ML-210, CO-TE-DW-240, CO-PW-FH-250, CO-TE-MH-250, CO-RD-PB-140, CO-IR-ML-380, CO-SD-MH-220, PRO-SD-1DL-100, CO-SD-MH-200, PRO-R25-SD-DL-100, CO-SD-MH-190, ENG-MT-SD-ML-A-100, ENG-MS-SD-ML-A-110, ENG-MT-SD-ML-A-110, ENG-SH-SD-ML-A-110, CO-SD-MH-180, CO-SD-ML-130, PRO-SW-1DL-110 SS, PRO-LV-DP-1DL-100, PRO-LV-DP-DL-100, CON-LV-DP-120, CON-LV-DP-190, CON-LV-DP-110, ENG-SH-MSN-A-120, ENG-SH-CTV-A-110, ENG-MS-CTV-A-110, ENG-MT-CTV-A-100, PRO-CTV-1DL-100, MS-CS-TE SS, CO-TE-MH-160, CO-TE-CTV-110, T/C-TSE-10 FF, MS-CF-IR SS, CO-TSE-TF-170, CO-IR-TF-170, CO-TSE-TF-180, CO-IR-TF-180, CO-TSE-TF-190, CO-TSE-TF-200, CO-TSE-TF-210, CO-IR-TF-210, MS-CF-IR, PRO-R25-RD-DL-170, PRO-RD-1DL-130, PRO-R25-RD-DL-100, PRO-RD-1DL-100, MS-MM-140, MS-MM-130, MS-CS-RD SS, ENG-SH-RD-A-100, ENG-SH-RD-A-110, ENG-MS-RD-A-30, ENG-MS-RD-A-20, ENG-MS-RD-A-10, ENG-MS-RD-A-40, CO-TE-MH-190, CO-TE-DW-160, CO-SL-CL-300, CO-SL-LP-380, CON-LV-HC-150, CON-LV-ML-150, CO-MV-ML-300, CO-IR-ML-180, CO-PW-FH-190, CO-PW-VC-250, CO-PW-ML-160, CO-TSE-ML-230, CO-SW-ML-160, CO-SW-MH-250, CO-SD-CB-200, CO-SD-ML-160, CO-SD-MH-260, CO-EW-210_R, CO-SL-LP-520, PRO-R25-RD-DL-110, PRO-RD-1DL-110, CO-EW-220, CO-SD-ML-190, CO-SD-MH-300, CO-SD-CB-230, CO-SW-ML-190, CO-SW-MH-300, CO-PW-ML-190, CO-PW-VC-280, CO-IR-ML-230, CO-TSE-ML-280, CO-MV-ML-330, CO-SL-LP-430, CO-SL-CL-330, CON-LV-HC-180, CON-LV-ML-180, CO-TE-DW-200 |  |

| ID | WBS | Task | Duration | Start | Finish | Predecessors |
| --- | --- | --- | --- | --- | --- | --- |
|  | PW11 | **TSE Network** |  | 2027-07-01 | 2027-07-14 |  |
| T/C-TSE-10 |  | Testing and Commissioning of TSE Network | 12d | 2027-07-01 | 2027-07-14 | CO-PW-FH-220, CO-TE-MH-220, CON-LV-DP-180, CO-RD-PB-150 SS, CO-IR-TF-210, CO-TE-CTV-210, CO-EW-230, CO-SD-ML-220, CO-PW-ML-220, CO-PW-VC-310, CO-TSE-ML-330, CO-MV-ML-360, CO-SL-LP-480, CO-SL-CL-360, CON-LV-HC-210, CON-LV-ML-210, CO-TE-DW-240, CO-PW-FH-250, CO-TE-MH-250, CO-RD-PB-140, CO-IR-ML-380, CO-SD-MH-220, PRO-SD-1DL-100, CO-SD-MH-200, PRO-R25-SD-DL-100, CO-SD-MH-190, ENG-MT-SD-ML-A-100, MS-CS-SD SS, ENG-MS-SD-ML-A-110, ENG-MT-SD-ML-A-110, ENG-SH-SD-ML-A-110, CO-SD-MH-180, CO-SD-ML-130, PRO-R25-SD-DL-110, PRO-R25-SD-DL-130, PRO-SD-1DL-130, PRO-SD-1DL-120, ENG-MT-SD-CB-A-110, ENG-SH-SD-CB-A-110, ENG-MS-SD-CB-A-110, PRO-SW-1DL-110 SS, ENG-MT-SW-ML-A-100, ENG-SH-SW-ML-A-110, MS-CS-SW SS, ENG-MS-SW-ML-A-110, PRO-SW-1DL-100, ENG-MT-SW-ML-A-110, PRO-LV-DP-1DL-100, PRO-LV-DP-DL-100, CON-LV-DP-120, CON-LV-DP-190, CON-LV-DP-110, ENG-SH-MSN-A-120, ENG-SH-CTV-A-110, ENG-MS-CTV-A-110, ENG-MT-CTV-A-100, PRO-CTV-1DL-100, MS-CS-TE SS, CO-TE-MH-160, CO-TE-CTV-110, T/C-PW FF, CO-TSE-TF-170, CON-RD-MR-150, CO-TSE-TF-180, CO-TSE-TF-190, CO-TSE-TF-200, CON-RD-MR-230, CON-RD-MR-250, CON-RD-MR-270, CON-RD-MR-290, CON-RD-MR-310, CO-TSE-TF-210, PRO-R25-RD-DL-170, PRO-RD-1DL-130, PRO-R25-RD-DL-100, PRO-RD-1DL-100, MS-MM-140, MS-MM-130, MS-CS-RD SS, ENG-SH-RD-A-100, ENG-SH-RD-A-110, ENG-MS-RD-A-30, ENG-MS-RD-A-20, ENG-MS-RD-A-10, ENG-MS-RD-A-40, CO-TE-MH-190, CO-TE-DW-160, CO-SL-CL-300, CO-SL-LP-380, CON-LV-HC-150, CON-LV-ML-150, CO-MV-ML-300, CO-IR-ML-180, CO-PW-FH-190, CO-PW-VC-250, CO-PW-ML-160, CO-TSE-ML-230, CO-SW-ML-160, CO-SW-MH-250, CO-SD-CB-200, CO-SD-ML-160, CO-SD-MH-260, CO-EW-210_R, CO-SL-LP-520, PRO-R25-RD-DL-110, PRO-RD-1DL-110, CO-EW-220, CO-SD-ML-190, CO-SD-MH-300, CO-SD-CB-230, CO-SW-ML-190, CO-SW-MH-300, CO-PW-ML-190, CO-PW-VC-280, CO-IR-ML-230, CO-TSE-ML-280, CO-MV-ML-330, CO-SL-LP-430, CO-SL-CL-330, CON-LV-HC-180, CON-LV-ML-180, CO-TE-DW-200 |
|  | PW | **Potable Water Network** |  | 2027-07-01 | 2027-07-14 |  |
| T/C-PW |  | Testing and Commissioning of Potable Water Network | 12d | 2027-07-01 | 2027-07-14 | CO-TE-DW-200, CO-PW-FH-220, CO-TE-MH-220, CON-LV-DP-180, CO-RD-PB-150 SS, CO-IR-TF-210, CO-TE-CTV-210, CO-EW-230, CO-SD-ML-220, CO-PW-ML-220, CO-PW-VC-310, CO-TSE-ML-330, CO-MV-ML-360, CO-SL-LP-480, CO-SL-CL-360, CON-LV-HC-210, CON-LV-ML-210, CO-TE-DW-240, CO-PW-FH-250, CO-TE-MH-250, CO-RD-PB-140, CO-IR-ML-380, CO-SD-MH-220, PRO-SD-1DL-100, CO-SD-MH-200, PRO-R25-SD-DL-100, CO-SD-MH-190, ENG-MT-SD-ML-A-100, MS-CS-SD SS, ENG-MS-SD-ML-A-110, ENG-MT-SD-ML-A-110, ENG-SH-SD-ML-A-110, CO-SD-MH-180, CO-SD-ML-130, PRO-R25-SD-DL-110, PRO-R25-SD-DL-130, PRO-SD-1DL-130, PRO-SD-1DL-120, ENG-MT-SD-CB-A-110, ENG-SH-SD-CB-A-110, ENG-MS-SD-CB-A-110, PRO-SW-1DL-110 SS, ENG-MT-SW-ML-A-100, ENG-SH-SW-ML-A-110, MS-CS-SW SS, ENG-MS-SW-ML-A-110, PRO-SW-1DL-100, ENG-MT-SW-ML-A-110, PRO-LV-DP-1DL-100, PRO-LV-DP-DL-100, CON-LV-DP-120, CON-LV-DP-190, CON-LV-DP-110, ENG-SH-MSN-A-120, ENG-SH-CTV-A-110, ENG-MS-CTV-A-110, ENG-MT-CTV-A-100, PRO-CTV-1DL-100, MS-CS-TE SS, CO-TE-MH-160, CO-TE-CTV-110, T/C-SW FF, CO-PW-TF-110, CO-PW-TF-100, CO-PW-TF-120, CON-RD-MR-150, CO-PW-TF-130, CO-PW-TF-150, CO-PW-TF-140, CO-PW-TF-160, CO-PW-TF-180, CO-PW-TF-170, CO-PW-TF-190, CO-PW-TF-210, CO-PW-TF-200, CON-RD-MR-230, CON-RD-MR-250, CON-RD-MR-270, CON-RD-MR-290, CON-RD-MR-310, CO-PW-TF-220, MS-CF-PW, PRO-R25-RD-DL-170, PRO-RD-1DL-130, PRO-R25-RD-DL-100, PRO-RD-1DL-100, MS-MM-140, MS-MM-130, MS-CS-RD SS, ENG-SH-RD-A-100, ENG-SH-RD-A-110, ENG-MS-RD-A-30, ENG-MS-RD-A-20, ENG-MS-RD-A-10, ENG-MS-RD-A-40, CO-TE-MH-190, CO-TE-DW-160, CO-SL-CL-300, CO-SL-LP-380, CON-LV-HC-150, CON-LV-ML-150, CO-MV-ML-300, CO-IR-ML-180, CO-PW-FH-190, CO-PW-VC-250, CO-PW-ML-160, CO-TSE-ML-230, CO-SW-ML-160, CO-SW-MH-250, CO-SD-CB-200, CO-SD-ML-160, CO-SD-MH-260, CO-EW-210_R, CO-SL-LP-520, PRO-R25-RD-DL-110, PRO-RD-1DL-110, CO-EW-220, CO-SD-ML-190, CO-SD-MH-300, CO-SD-CB-230, CO-SW-ML-190, CO-SW-MH-300, CO-PW-ML-190, CO-PW-VC-280, CO-IR-ML-230, CO-TSE-ML-280, CO-MV-ML-330, CO-SL-LP-430, CO-SL-CL-330, CON-LV-HC-180, CON-LV-ML-180 |
|  | SW | **Sewage Network** |  | 2027-07-01 | 2027-07-14 |  |
| T/C-SW |  | Testing and Commissioning of Sewage Network | 12d | 2027-07-01 | 2027-07-14 | CO-TE-DW-200, CO-PW-FH-220, CO-TE-MH-220, CON-LV-DP-180, PRO-SW-1DL-110, PRO-R25-SW-DL-110, ENG-MT-SW-ML-A-100, ENG-SH-SW-ML-A-110, MS-CS-SW SS, CO-EW-200, ENG-MS-SW-ML-A-110, CO-SD-MH-220, CO-SD-ML-130, PRO-R25-SD-DL-110, PRO-R25-SD-DL-130, PRO-SD-1DL-130, PRO-SD-1DL-120, ENG-MT-SD-CB-A-110, ENG-SH-SD-CB-A-110, ENG-MS-SD-CB-A-110, MS-CS-SD SS, PRO-SW-1DL-100, PRO-R25-SW-DL-100, ENG-MT-SW-ML-A-110, PRO-SD-1DL-140, PRO-R25-SD-DL-140, CO-SW-MH-240, CO-SW-MH-230, CO-SW-MH-220, CO-EW-240, CO-SD-MH-380, CO-SD-ML-250, CO-SW-MH-210, CO-SD-CB-190, CO-SD-CB-180, CO-SW-ML-150, CO-SW-ML-140, CO-RD-PB-150 SS, CO-IR-TF-210, CO-TE-CTV-210, CO-EW-230, CO-SD-ML-220, CO-PW-ML-220, CO-PW-VC-310, CO-TSE-ML-330, CO-MV-ML-360, CO-SL-LP-480, CO-SL-CL-360, CON-LV-HC-210, CON-LV-ML-210, CO-TE-DW-240, CO-PW-FH-250, CO-TE-MH-250, CO-RD-PB-140, CO-IR-ML-380, PRO-SD-1DL-100, CO-SD-MH-200, PRO-R25-SD-DL-100, CO-SD-MH-190, ENG-MT-SD-ML-A-100, ENG-MS-SD-ML-A-110, ENG-MT-SD-ML-A-110, ENG-SH-SD-ML-A-110, CO-SD-MH-180, PRO-SW-1DL-110 SS, PRO-LV-DP-1DL-100, PRO-LV-DP-DL-100, CON-LV-DP-120, CON-LV-DP-190, CON-LV-DP-110, ENG-SH-MSN-A-120, ENG-SH-CTV-A-110, ENG-MS-CTV-A-110, ENG-MT-CTV-A-100, PRO-CTV-1DL-100, MS-CS-TE SS, CO-TE-MH-160, CO-TE-CTV-110, T/C-DPO FF, CON-RD-MR-150, CO-SW-TF-230, CO-SW-TF-250, CO-SW-TF-270, CO-SW-TF-290, CON-RD-MR-230, CON-RD-MR-250, CON-RD-MR-270, CON-RD-MR-290, CON-RD-MR-310, MS-MO-50, MS-MO-20, PRO-R25-RD-DL-170, PRO-RD-1DL-130, PRO-R25-RD-DL-100, PRO-RD-1DL-100, MS-MM-140, MS-MM-130, MS-CS-RD SS, ENG-SH-RD-A-100, ENG-SH-RD-A-110, ENG-MS-RD-A-30, ENG-MS-RD-A-20, ENG-MS-RD-A-10, ENG-MS-RD-A-40, CO-TE-MH-190, CO-TE-DW-160, CO-SL-CL-300, CO-SL-LP-380, CON-LV-HC-150, CON-LV-ML-150, CO-MV-ML-300, CO-IR-ML-180, CO-PW-FH-190, CO-PW-VC-250, CO-PW-ML-160, CO-TSE-ML-230, CO-SW-ML-160, CO-SW-MH-250, CO-SD-CB-200, CO-SD-ML-160, CO-SD-MH-260, CO-EW-210_R, CO-SL-LP-520, PRO-R25-RD-DL-110, PRO-RD-1DL-110, CO-EW-220, CO-SD-ML-190, CO-SD-MH-300, CO-SD-CB-230, CO-SW-ML-190, CO-SW-MH-300, CO-PW-ML-190, CO-PW-VC-280, CO-IR-ML-230, CO-TSE-ML-280, CO-MV-ML-330, CO-SL-LP-430, CO-SL-CL-330, CON-LV-HC-180, CON-LV-ML-180 |
|  | SD | **Storm Drainage Network** |  | 2027-07-01 | 2027-07-14 |  |
| T/C-DPO |  | Testing and Commissioning of Storm Drainage Ponds | 12d | 2027-07-01 | 2027-07-14 | CO-TE-DW-200, CO-PW-FH-220, CO-TE-MH-220, CON-LV-DP-180, CO-RD-PB-150 SS, CO-IR-TF-210, CO-TE-CTV-210, CO-EW-230, CO-SD-ML-220, CO-PW-ML-220, CO-PW-VC-310, CO-TSE-ML-330, CO-MV-ML-360, CO-SL-LP-480, CO-SL-CL-360, CON-LV-HC-210, CON-LV-ML-210, CO-TE-DW-240, CO-PW-FH-250, CO-TE-MH-250, CO-RD-PB-140, CO-IR-ML-380, CO-SD-MH-220, PRO-SD-1DL-100, CO-SD-MH-200, PRO-R25-SD-DL-100, CO-SD-MH-190, ENG-MT-SD-ML-A-100, MS-CS-SD SS, ENG-MS-SD-ML-A-110, ENG-MT-SD-ML-A-110, ENG-SH-SD-ML-A-110, CO-SD-MH-180, CO-SD-ML-130, PRO-R25-SD-DL-110, PRO-R25-SD-DL-130, PRO-SD-1DL-130, PRO-SD-1DL-120, ENG-MT-SD-CB-A-110, ENG-SH-SD-CB-A-110, ENG-MS-SD-CB-A-110, PRO-SW-1DL-110 SS, ENG-MT-SW-ML-A-100, ENG-SH-SW-ML-A-110, MS-CS-SW SS, ENG-MS-SW-ML-A-110, PRO-SW-1DL-100, ENG-MT-SW-ML-A-110, PRO-LV-DP-1DL-100, PRO-LV-DP-DL-100, CON-LV-DP-120, CON-LV-DP-190, CON-LV-DP-110, ENG-SH-MSN-A-120, ENG-SH-CTV-A-110, ENG-MS-CTV-A-110, ENG-MT-CTV-A-100, PRO-CTV-1DL-100, MS-CS-TE SS, CO-TE-MH-160, CO-TE-CTV-110, T/C-SL FF, MS-CF-SD, CO-SD-PO-110-P1, CO-SD-PO-110-P2, MS-MO-20, MS-MO-50, PRO-R25-RD-DL-170, PRO-RD-1DL-130, PRO-R25-RD-DL-100, PRO-RD-1DL-100, MS-MM-140, MS-MM-130, MS-CS-RD SS, ENG-SH-RD-A-100, ENG-SH-RD-A-110, ENG-MS-RD-A-30, ENG-MS-RD-A-20, ENG-MS-RD-A-10, ENG-MS-RD-A-40, CO-TE-MH-190, CO-TE-DW-160, CO-SL-CL-300, CO-SL-LP-380, CON-LV-HC-150, CON-LV-ML-150, CO-MV-ML-300, CO-IR-ML-180, CO-PW-FH-190, CO-PW-VC-250, CO-PW-ML-160, CO-TSE-ML-230, CO-SW-ML-160, CO-SW-MH-250, CO-SD-CB-200, CO-SD-ML-160, CO-SD-MH-260, CO-EW-210_R, CO-SL-LP-520, PRO-R25-RD-DL-110, PRO-RD-1DL-110, CO-EW-220, CO-SD-ML-190, CO-SD-MH-300, CO-SD-CB-230, CO-SW-ML-190, CO-SW-MH-300, CO-PW-ML-190, CO-PW-VC-280, CO-IR-ML-230, CO-TSE-ML-280, CO-MV-ML-330, CO-SL-LP-430, CO-SL-CL-330, CON-LV-HC-180, CON-LV-ML-180 |
| T/C-SD |  | Testing and Commissioning of Storm Drainage Ponds and Storm Drainage Network | 12d | 2027-07-01 | 2027-07-14 | CO-TE-DW-200, CO-PW-FH-220, CO-TE-MH-220, CON-LV-DP-180, CO-SD-ML-130, PRO-R25-SD-DL-110, PRO-R25-SD-DL-130, PRO-SD-1DL-130, PRO-SD-1DL-120, ENG-MT-SD-CB-A-110, ENG-SH-SD-CB-A-110, ENG-MS-SD-CB-A-110, MS-CS-SD SS, CO-SD-MH-220, PRO-SD-1DL-140, PRO-R25-SD-DL-140, PRO-SD-1DL-150, PRO-R25-SD-DL-150, CO-SD-ML-250, CO-SD-PO-110-P1, CO-SD-CB-190, CO-SD-CB-180, CO-SD-CB-TF-190, CO-SD-MH-380, CO-RD-PB-150 SS, CO-IR-TF-210, CO-TE-CTV-210, CO-EW-230, CO-SD-ML-220, CO-PW-ML-220, CO-PW-VC-310, CO-TSE-ML-330, CO-MV-ML-360, CO-SL-LP-480, CO-SL-CL-360, CON-LV-HC-210, CON-LV-ML-210, CO-TE-DW-240, CO-PW-FH-250, CO-TE-MH-250, CO-RD-PB-140, CO-IR-ML-380, PRO-SD-1DL-100, CO-SD-MH-200, PRO-R25-SD-DL-100, CO-SD-MH-190, ENG-MT-SD-ML-A-100, ENG-MS-SD-ML-A-110, ENG-MT-SD-ML-A-110, ENG-SH-SD-ML-A-110, CO-SD-MH-180, PRO-SW-1DL-110 SS, ENG-MT-SW-ML-A-100, ENG-SH-SW-ML-A-110, MS-CS-SW SS, ENG-MS-SW-ML-A-110, PRO-SW-1DL-100, ENG-MT-SW-ML-A-110, PRO-LV-DP-1DL-100, PRO-LV-DP-DL-100, CON-LV-DP-120, CON-LV-DP-190, CON-LV-DP-110, ENG-SH-MSN-A-120, ENG-SH-CTV-A-110, ENG-MS-CTV-A-110, ENG-MT-CTV-A-100, PRO-CTV-1DL-100, MS-CS-TE SS, CO-TE-MH-160, CO-TE-CTV-110, T/C-SL FF, MS-CF-SD, CO-SD-ML-TF-100, CO-SD-MH-TF-210, CO-SD-PO-110-P2, CON-RD-MR-150, CO-SD-ML-TF-110, CO-SD-CB-TF-170, CO-SD-MH-TF-230, CO-SD-CB-TF-180, CO-SD-ML-TF-120, CO-SD-CB-TF-200, CO-SD-MH-TF-250, CO-SD-CB-TF-210, CO-SD-ML-TF-130, CO-SD-CB-TF-260, CO-SD-MH-TF-290, CON-RD-MR-230, CON-RD-MR-250, CON-RD-MR-270, CON-RD-MR-290, CON-RD-MR-310, T/C-DPO FF, MS-MO-50, MS-MO-20, PRO-R25-RD-DL-170, PRO-RD-1DL-130, PRO-R25-RD-DL-100, PRO-RD-1DL-100, MS-MM-140, MS-MM-130, MS-CS-RD SS, ENG-SH-RD-A-100, ENG-SH-RD-A-110, ENG-MS-RD-A-30, ENG-MS-RD-A-20, ENG-MS-RD-A-10, ENG-MS-RD-A-40, CO-TE-MH-190, CO-TE-DW-160, CO-SL-CL-300, CO-SL-LP-380, CON-LV-HC-150, CON-LV-ML-150, CO-MV-ML-300, CO-IR-ML-180, CO-PW-FH-190, CO-PW-VC-250, CO-PW-ML-160, CO-TSE-ML-230, CO-SW-ML-160, CO-SW-MH-250, CO-SD-CB-200, CO-SD-ML-160, CO-SD-MH-260, CO-EW-210_R, CO-SL-LP-520, PRO-R25-RD-DL-110, PRO-RD-1DL-110, CO-EW-220, CO-SD-ML-190, CO-SD-MH-300, CO-SD-CB-230, CO-SW-ML-190, CO-SW-MH-300, CO-PW-ML-190, CO-PW-VC-280, CO-IR-ML-230, CO-TSE-ML-280, CO-MV-ML-330, CO-SL-LP-430, CO-SL-CL-330, CON-LV-HC-180, CON-LV-ML-180 |
|  | SL | **Street Lighting Network** |  | 2027-06-26 | 2027-07-08 |  |
| T/C-SL |  | Testing and Commissioning of Street Lighting Network | 12d | 2027-06-26 | 2027-07-08 | CO-TE-DW-200, CO-PW-FH-220, CO-TE-MH-220, CON-LV-DP-180, CO-SL-DB-340, CO-SL-ES-330, PRO-R25-SL-DL-160, CO-SL-LP-570, CO-SL-CL-420, CO-EW-200, CO-SL-ES-310, CO-SL-CL-390, CO-EW-240, CO-RD-PB-150 SS, CO-IR-TF-210, CO-TE-CTV-210, CO-EW-230, CO-SD-ML-220, CO-PW-ML-220, CO-PW-VC-310, CO-TSE-ML-330, CO-MV-ML-360, CO-SL-LP-480, CO-SL-CL-360, CON-LV-HC-210, CON-LV-ML-210, CO-TE-DW-240, CO-PW-FH-250, CO-TE-MH-250, CO-RD-PB-140, CO-IR-ML-380, CO-SD-MH-220, PRO-SD-1DL-100, CO-SD-MH-200, PRO-R25-SD-DL-100, CO-SD-MH-190, ENG-MT-SD-ML-A-100, MS-CS-SD SS, ENG-MS-SD-ML-A-110, ENG-MT-SD-ML-A-110, ENG-SH-SD-ML-A-110, CO-SD-MH-180, CO-SD-ML-130, PRO-R25-SD-DL-110, PRO-R25-SD-DL-130, PRO-SD-1DL-130, PRO-SD-1DL-120, ENG-MT-SD-CB-A-110, ENG-SH-SD-CB-A-110, ENG-MS-SD-CB-A-110, PRO-SW-1DL-110 SS, ENG-MT-SW-ML-A-100, ENG-SH-SW-ML-A-110, MS-CS-SW SS, ENG-MS-SW-ML-A-110, PRO-SW-1DL-100, ENG-MT-SW-ML-A-110, PRO-LV-DP-1DL-100, PRO-LV-DP-DL-100, CON-LV-DP-120, CON-LV-DP-190, CON-LV-DP-110, ENG-SH-MSN-A-120, ENG-SH-CTV-A-110, ENG-MS-CTV-A-110, ENG-MT-CTV-A-100, PRO-CTV-1DL-100, MS-CS-TE SS, CO-SL-ES-290, CO-TE-MH-160, CO-TE-CTV-110, T/C-TE FF, MS-CF-SL, MS-CF-SL SS, CO-SL-TF-410, CO-SL-LP-370, CO-SL-TF-440, CO-SL-TF-450, CO-SL-TF-460, CO-SL-LP-420, CO-SL-TF-490, CO-SL-LP-470, CO-SL-TF-530, CO-SL-LP-530, CO-SL-TF-570, CO-SL-LP-580, PRO-R25-RD-DL-170, PRO-RD-1DL-130, PRO-R25-RD-DL-100, PRO-RD-1DL-100, MS-MM-140, MS-MM-130, MS-CS-RD SS, ENG-SH-RD-A-100, ENG-SH-RD-A-110, ENG-MS-RD-A-30, ENG-MS-RD-A-20, ENG-MS-RD-A-10, ENG-MS-RD-A-40, CO-TE-MH-190, CO-TE-DW-160, CO-SL-CL-300, CO-SL-LP-380, CON-LV-HC-150, CON-LV-ML-150, CO-MV-ML-300, CO-IR-ML-180, CO-PW-FH-190, CO-PW-VC-250, CO-PW-ML-160, CO-TSE-ML-230, CO-SW-ML-160, CO-SW-MH-250, CO-SD-CB-200, CO-SD-ML-160, CO-SD-MH-260, CO-EW-210_R, CO-SL-LP-520, CO-SL-ES-250, PRO-R25-SL-DL-160 SS, ENG-MT-SL-DB-A-100, MS-CS-SL SS, PRO-R25-SL-DL-170, PRO-R25-RD-DL-110, PRO-RD-1DL-110, CO-EW-220, CO-SD-ML-190, CO-SD-MH-300, CO-SD-CB-230, CO-SW-ML-190, CO-SW-MH-300, CO-PW-ML-190, CO-PW-VC-280, CO-IR-ML-230, CO-TSE-ML-280, CO-MV-ML-330, CO-SL-LP-430, CO-SL-CL-330, CON-LV-HC-180, CON-LV-ML-180 |
|  | TE | **Telecom and Light Current Network** |  | 2027-06-26 | 2027-07-08 |  |
| T/C-TE |  | Testing and Commissioning of Telecom and Light Current Networks | 12d | 2027-06-26 | 2027-07-08 | CO-TE-DW-200, CO-PW-FH-220, CO-TE-MH-220, CON-LV-DP-180, CO-TE-CTV-240, CO-TE-CTV-150 SS, CO-RD-PB-150 SS, CO-IR-TF-210, CO-TE-CTV-210, CO-EW-230, CO-SD-ML-220, CO-PW-ML-220, CO-PW-VC-310, CO-TSE-ML-330, CO-MV-ML-360, CO-SL-LP-480, CO-SL-CL-360, CON-LV-HC-210, CON-LV-ML-210, CO-TE-DW-240, CO-PW-FH-250, CO-TE-MH-250, CO-RD-PB-140, CO-IR-ML-380, CO-SD-MH-220, PRO-SD-1DL-100, CO-SD-MH-200, PRO-R25-SD-DL-100, CO-SD-MH-190, ENG-MT-SD-ML-A-100, MS-CS-SD SS, ENG-MS-SD-ML-A-110, ENG-MT-SD-ML-A-110, ENG-SH-SD-ML-A-110, CO-SD-MH-180, CO-SD-ML-130, PRO-R25-SD-DL-110, PRO-R25-SD-DL-130, PRO-SD-1DL-130, PRO-SD-1DL-120, ENG-MT-SD-CB-A-110, ENG-SH-SD-CB-A-110, ENG-MS-SD-CB-A-110, PRO-SW-1DL-110 SS, ENG-MT-SW-ML-A-100, ENG-SH-SW-ML-A-110, MS-CS-SW SS, ENG-MS-SW-ML-A-110, PRO-SW-1DL-100, ENG-MT-SW-ML-A-110, PRO-LV-DP-1DL-100, PRO-LV-DP-DL-100, CON-LV-DP-120, CON-LV-DP-190, CON-LV-DP-110, ENG-SH-MSN-A-120, ENG-SH-CTV-A-110, ENG-MS-CTV-A-110, ENG-MT-CTV-A-100, PRO-CTV-1DL-100, MS-CS-TE SS, CO-TE-MH-160, CO-TE-CTV-110, T/C-MV FF, MS-CF-TE, CO-TE-CTV-TF-140, CON-RD-MR-150, CO-TE-CTV-TF-180, CO-TE-CTV-TF-220, CO-TE-CTV-TF-260, CON-RD-MR-230, CON-RD-MR-250, CON-RD-MR-270, CON-RD-MR-290, CON-RD-MR-310, CO-TE-CTV-TF-310, CO-TE-CTV-TF-320, CO-TE-CTV-TF-330, CO-TE-CTV-TF-340, CO-TE-CTV-TF-350, CO-TE-CTV-TF-360, PRO-R25-RD-DL-170, PRO-RD-1DL-130, PRO-R25-RD-DL-100, PRO-RD-1DL-100, MS-MM-140, MS-MM-130, MS-CS-RD SS, ENG-SH-RD-A-100, ENG-SH-RD-A-110, ENG-MS-RD-A-30, ENG-MS-RD-A-20, ENG-MS-RD-A-10, ENG-MS-RD-A-40, CO-TE-MH-190, CO-TE-DW-160, CO-SL-CL-300, CO-SL-LP-380, CON-LV-HC-150, CON-LV-ML-150, CO-MV-ML-300, CO-IR-ML-180, CO-PW-FH-190, CO-PW-VC-250, CO-PW-ML-160, CO-TSE-ML-230, CO-SW-ML-160, CO-SW-MH-250, CO-SD-CB-200, CO-SD-ML-160, CO-SD-MH-260, CO-EW-210_R, CO-SL-LP-520, PRO-R25-RD-DL-110, PRO-RD-1DL-110, CO-EW-220, CO-SD-ML-190, CO-SD-MH-300, CO-SD-CB-230, CO-SW-ML-190, CO-SW-MH-300, CO-PW-ML-190, CO-PW-VC-280, CO-IR-ML-230, CO-TSE-ML-280, CO-MV-ML-330, CO-SL-LP-430, CO-SL-CL-330, CON-LV-HC-180, CON-LV-ML-180 |
|  | MV | **Medium Voltage Network** |  | 2027-06-26 | 2027-07-08 |  |
| T/C-MV |  | Testing and Commissioning of Medium Voltage Network | 12d | 2027-06-26 | 2027-07-08 | CO-TE-DW-200, CO-PW-FH-220, CO-TE-MH-220, CON-LV-DP-180, CO-RD-PB-150 SS, CO-IR-TF-210, CO-TE-CTV-210, CO-EW-230, CO-SD-ML-220, CO-PW-ML-220, CO-PW-VC-310, CO-TSE-ML-330, CO-MV-ML-360, CO-SL-LP-480, CO-SL-CL-360, CON-LV-HC-210, CON-LV-ML-210, CO-TE-DW-240, CO-PW-FH-250, CO-TE-MH-250, CO-RD-PB-140, CO-IR-ML-380, CO-SD-MH-220, PRO-SD-1DL-100, CO-SD-MH-200, PRO-R25-SD-DL-100, CO-SD-MH-190, ENG-MT-SD-ML-A-100, MS-CS-SD SS, ENG-MS-SD-ML-A-110, ENG-MT-SD-ML-A-110, ENG-SH-SD-ML-A-110, CO-SD-MH-180, CO-SD-ML-130, PRO-R25-SD-DL-110, PRO-R25-SD-DL-130, PRO-SD-1DL-130, PRO-SD-1DL-120, ENG-MT-SD-CB-A-110, ENG-SH-SD-CB-A-110, ENG-MS-SD-CB-A-110, PRO-SW-1DL-110 SS, ENG-MT-SW-ML-A-100, ENG-SH-SW-ML-A-110, MS-CS-SW SS, ENG-MS-SW-ML-A-110, PRO-SW-1DL-100, ENG-MT-SW-ML-A-110, PRO-LV-DP-1DL-100, PRO-LV-DP-DL-100, CON-LV-DP-120, CON-LV-DP-190, CON-LV-DP-110, ENG-SH-MSN-A-120, ENG-SH-CTV-A-110, ENG-MS-CTV-A-110, ENG-MT-CTV-A-100, PRO-CTV-1DL-100, MS-CS-TE SS, CO-TE-MH-160, CO-TE-CTV-110, T/C-RD FF, MS-CF-MV, CO-MV-TF-230, CO-MV-TF-240, CO-MV-TF-250, CO-MV-TF-260, PRO-R25-RD-DL-170, PRO-RD-1DL-130, PRO-R25-RD-DL-100, PRO-RD-1DL-100, MS-MM-140, MS-MM-130, MS-CS-RD SS, ENG-SH-RD-A-100, ENG-SH-RD-A-110, ENG-MS-RD-A-30, ENG-MS-RD-A-20, ENG-MS-RD-A-10, ENG-MS-RD-A-40, CO-TE-MH-190, CO-TE-DW-160, CO-SL-CL-300, CO-SL-LP-380, CON-LV-HC-150, CON-LV-ML-150, CO-MV-ML-300, CO-IR-ML-180, CO-PW-FH-190, CO-PW-VC-250, CO-PW-ML-160, CO-TSE-ML-230, CO-SW-ML-160, CO-SW-MH-250, CO-SD-CB-200, CO-SD-ML-160, CO-SD-MH-260, CO-EW-210_R, CO-SL-LP-520, PRO-R25-RD-DL-110, PRO-RD-1DL-110, CO-EW-220, CO-SD-ML-190, CO-SD-MH-300, CO-SD-CB-230, CO-SW-ML-190, CO-SW-MH-300, CO-PW-ML-190, CO-PW-VC-280, CO-IR-ML-230, CO-TSE-ML-280, CO-MV-ML-330, CO-SL-LP-430, CO-SL-CL-330, CON-LV-HC-180, CON-LV-ML-180 |
|  | RD | **Road Works** |  | 2027-06-26 | 2027-07-08 |  |
| T/C-RD |  | Testing and Commissioning of Road Works | 12d | 2027-06-26 | 2027-07-08 | CO-TE-DW-200, CO-PW-FH-220, CO-TE-MH-220, CON-LV-DP-180, CO-RD-PB-150 SS, CO-IR-TF-210, CO-TE-CTV-210, CO-EW-230, CO-SD-ML-220, CO-PW-ML-220, CO-PW-VC-310, CO-TSE-ML-330, CO-MV-ML-360, CO-SL-LP-480, CO-SL-CL-360, CON-LV-HC-210, CON-LV-ML-210, CO-TE-DW-240, CO-PW-FH-250, CO-TE-MH-250, CO-RD-PB-140, CO-IR-ML-380, CO-SD-MH-220, PRO-SD-1DL-100, CO-SD-MH-200, PRO-R25-SD-DL-100, CO-SD-MH-190, ENG-MT-SD-ML-A-100, MS-CS-SD SS, ENG-MS-SD-ML-A-110, ENG-MT-SD-ML-A-110, ENG-SH-SD-ML-A-110, CO-SD-MH-180, CO-SD-ML-130, PRO-R25-SD-DL-110, PRO-R25-SD-DL-130, PRO-SD-1DL-130, PRO-SD-1DL-120, ENG-MT-SD-CB-A-110, ENG-SH-SD-CB-A-110, ENG-MS-SD-CB-A-110, PRO-SW-1DL-110 SS, ENG-MT-SW-ML-A-100, ENG-SH-SW-ML-A-110, MS-CS-SW SS, ENG-MS-SW-ML-A-110, PRO-SW-1DL-100, ENG-MT-SW-ML-A-110, PRO-LV-DP-1DL-100, PRO-LV-DP-DL-100, CON-LV-DP-120, CON-LV-DP-190, CON-LV-DP-110, ENG-SH-MSN-A-120, ENG-SH-CTV-A-110, ENG-MS-CTV-A-110, ENG-MT-CTV-A-100, PRO-CTV-1DL-100, MS-CS-TE SS, CO-TE-MH-160, CO-TE-CTV-110, T/C-CTV FF, MS-CF-RD, MS-CF-RD SS, CO-RD-PV-160, CO-RD-PV-170, CO-RD-F-RM-180, CO-RD-F-TS-120, CON-RD-MR-150, CO-RD-PV-180, CO-RD-PV-190, CO-RD-F-RM-190, CO-RD-F-TS-130, CO-RD-PV-200, CO-RD-PV-210, CO-RD-F-RM-200, CO-RD-F-TS-140, CO-RD-PV-220, CO-RD-PV-230, CO-RD-F-RM-210, CO-RD-F-TS-150, CO-RD-PV-240, CO-RD-PV-250, CO-RD-F-RM-220, CO-RD-F-TS-160, CON-RD-MR-230, CO-RD-PV-260, CO-RD-PV-270, CO-RD-F-RM-230, CO-RD-F-TS-170, CON-RD-MR-250, CO-RD-PV-280, CO-RD-PV-290, CO-RD-F-RM-240, CO-RD-F-TS-180, CON-RD-MR-270, CO-RD-PV-300, CO-RD-PV-310, CO-RD-F-RM-250, CO-RD-F-TS-190, CON-RD-MR-290, CO-RD-PV-320, CO-RD-PV-330, CO-RD-F-RM-260, CO-RD-F-TS-200, CON-RD-MR-310, PRO-R25-RD-DL-170, PRO-RD-1DL-130, PRO-R25-RD-DL-100, PRO-RD-1DL-100, MS-MM-140, MS-MM-130, MS-CS-RD SS, ENG-SH-RD-A-100, ENG-SH-RD-A-110, ENG-MS-RD-A-30, ENG-MS-RD-A-20, ENG-MS-RD-A-10, ENG-MS-RD-A-40, CO-TE-MH-190, CO-TE-DW-160, CO-SL-CL-300, CO-SL-LP-380, CON-LV-HC-150, CON-LV-ML-150, CO-MV-ML-300, CO-IR-ML-180, CO-PW-FH-190, CO-PW-VC-250, CO-PW-ML-160, CO-TSE-ML-230, CO-SW-ML-160, CO-SW-MH-250, CO-SD-CB-200, CO-SD-ML-160, CO-SD-MH-260, CO-EW-210_R, CO-SL-LP-520, PRO-R25-RD-DL-110, PRO-RD-1DL-110, CO-EW-220, CO-SD-ML-190, CO-SD-MH-300, CO-SD-CB-230, CO-SW-ML-190, CO-SW-MH-300, CO-PW-ML-190, CO-PW-VC-280, CO-IR-ML-230, CO-TSE-ML-280, CO-MV-ML-330, CO-SL-LP-430, CO-SL-CL-330, CON-LV-HC-180, CON-LV-ML-180 |
|  | 1 | **Utility Buildings** |  | 2027-06-21 | 2027-07-19 |  |
| T/C-CTV |  | Testing and Commissioning of Guard Room and Boundary Fence | 16d | 2027-06-21 | 2027-07-08 | CO-TE-DW-200, CO-PW-FH-220, CO-TE-MH-220, CON-LV-DP-180, CO-RD-PB-150 SS, CO-IR-TF-210, CO-TE-CTV-210, CO-EW-230, CO-SD-ML-220, CO-PW-ML-220, CO-PW-VC-310, CO-TSE-ML-330, CO-MV-ML-360, CO-SL-LP-480, CO-SL-CL-360, CON-LV-HC-210, CON-LV-ML-210, CO-TE-DW-240, CO-PW-FH-250, CO-TE-MH-250, CO-RD-PB-140, CO-IR-ML-380, CO-SD-MH-220, PRO-SD-1DL-100, CO-SD-MH-200, PRO-R25-SD-DL-100, CO-SD-MH-190, ENG-MT-SD-ML-A-100, MS-CS-SD SS, ENG-MS-SD-ML-A-110, ENG-MT-SD-ML-A-110, ENG-SH-SD-ML-A-110, CO-SD-MH-180, CO-SD-ML-130, PRO-R25-SD-DL-110, PRO-R25-SD-DL-130, PRO-SD-1DL-130, PRO-SD-1DL-120, ENG-MT-SD-CB-A-110, ENG-SH-SD-CB-A-110, ENG-MS-SD-CB-A-110, PRO-SW-1DL-110 SS, ENG-MT-SW-ML-A-100, ENG-SH-SW-ML-A-110, MS-CS-SW SS, ENG-MS-SW-ML-A-110, PRO-SW-1DL-100, ENG-MT-SW-ML-A-110, PRO-LV-DP-1DL-100, PRO-LV-DP-DL-100, CON-LV-DP-120, CON-LV-DP-190, CON-LV-DP-110, ENG-SH-MSN-A-120, ENG-SH-CTV-A-110, ENG-MS-CTV-A-110, ENG-MT-CTV-A-100, PRO-CTV-1DL-100, MS-CS-TE SS, CO-TE-MH-160, CO-TE-CTV-110, A1240, A1100, CON-RD-MR-150, CON-RD-MR-230, CON-RD-MR-250, CON-RD-MR-270, CON-RD-MR-290, CON-RD-MR-310, PRO-R25-RD-DL-110, PRO-RD-1DL-110, CO-EW-220, CO-SD-ML-190, CO-SD-MH-300, CO-SD-CB-230, CO-SW-ML-190, CO-SW-MH-300, CO-PW-ML-190, CO-PW-VC-280, CO-IR-ML-230, CO-TSE-ML-280, CO-MV-ML-330, CO-SL-LP-430, CO-SL-CL-330, ENG-MS-RD-A-20, ENG-MS-RD-A-30, ENG-MS-RD-A-40, PRO-R25-RD-DL-100, CON-LV-HC-180, CON-LV-ML-180, ENG-MS-RD-A-10, ENG-SH-RD-A-100, ENG-SH-RD-A-110, MS-CS-RD SS, PRO-RD-1DL-100, MS-MM-130, MS-MM-140 |
| T/C-CTV20 |  | Testing and Commissioning of Softscape And Planting | 16d | 2027-06-23 | 2027-07-11 | T/C-CTV FF, CO-LS-PL-160, CO-LS-SF-170 |
| T/C-CTV10 |  | Testing and Commissioning of Utility Buildings | 16d | 2027-07-01 | 2027-07-19 | CO-TE-DW-200, CO-PW-FH-220, CO-TE-MH-220, CON-LV-DP-180, CO-RD-PB-150 SS, CO-IR-TF-210, CO-TE-CTV-210, CO-EW-230, CO-SD-ML-220, CO-PW-ML-220, CO-PW-VC-310, CO-TSE-ML-330, CO-MV-ML-360, CO-SL-LP-480, CO-SL-CL-360, CON-LV-HC-210, CON-LV-ML-210, CO-TE-DW-240, CO-PW-FH-250, CO-TE-MH-250, CO-RD-PB-140, CO-IR-ML-380, CO-SD-MH-220, PRO-SD-1DL-100, CO-SD-MH-200, PRO-R25-SD-DL-100, CO-SD-MH-190, ENG-MT-SD-ML-A-100, MS-CS-SD SS, ENG-MS-SD-ML-A-110, ENG-MT-SD-ML-A-110, ENG-SH-SD-ML-A-110, CO-SD-MH-180, CO-SD-ML-130, PRO-R25-SD-DL-110, PRO-R25-SD-DL-130, PRO-SD-1DL-130, PRO-SD-1DL-120, ENG-MT-SD-CB-A-110, ENG-SH-SD-CB-A-110, ENG-MS-SD-CB-A-110, PRO-SW-1DL-110 SS, ENG-MT-SW-ML-A-100, ENG-SH-SW-ML-A-110, MS-CS-SW SS, ENG-MS-SW-ML-A-110, PRO-SW-1DL-100, ENG-MT-SW-ML-A-110, PRO-LV-DP-1DL-100, PRO-LV-DP-DL-100, CON-LV-DP-120, CON-LV-DP-190, CON-LV-DP-110, ENG-SH-MSN-A-120, ENG-SH-CTV-A-110, ENG-MS-CTV-A-110, ENG-MT-CTV-A-100, PRO-CTV-1DL-100, MS-CS-TE SS, PRO-SPS-LL-MSI-10, CO-UB-PWT-170, CO-UB-PS-320, PRO-TSE-LL-MSI-30, CO-UB-IRT-210, CO-TE-MH-160, CO-TE-CTV-110, T/C-CTV FF, CO-SU-FE-N-EL-310, CO-UB-PS-390, PRO-R25-RD-DL-110, PRO-RD-1DL-110, CO-EW-220, CO-SD-ML-190, CO-SD-MH-300, CO-SD-CB-230, CO-SW-ML-190, CO-SW-MH-300, CO-PW-ML-190, CO-PW-VC-280, CO-IR-ML-230, CO-TSE-ML-280, CO-MV-ML-330, CO-SL-LP-430, CO-SL-CL-330, ENG-MS-RD-A-20, ENG-MS-RD-A-30, ENG-MS-RD-A-40, PRO-R25-RD-DL-100, CON-LV-HC-180, CON-LV-ML-180, ENG-MS-RD-A-10, ENG-SH-RD-A-100, ENG-SH-RD-A-110, MS-CS-RD SS, PRO-RD-1DL-100, MS-MM-130, MS-MM-140 |
|  | 1 | **Handing over and close out** |  | 2027-06-26 | 2027-07-22 |  |
|  | 2 | **As-Built** |  | 2027-06-26 | 2027-07-22 |  |
| HO-140 |  | Submission As-Built Drawing For Roads Network | 10d | 2027-06-26 | 2027-07-06 | T/C-RD SS |
| HO-150 |  | Submission As-Built Drawing For Street Lighting Network | 10d | 2027-06-26 | 2027-07-06 | T/C-SL SS |
| HO-160 |  | Submission As-Built Drawing For Telecom and Light Current Networks | 10d | 2027-06-26 | 2027-07-06 | T/C-TE SS |
| HO-100 |  | Submission As-Built Drawing For Sewage Network | 10d | 2027-07-01 | 2027-07-12 | T/C-SW SS, MS-MO-50 |
| HO-130 |  | Submission As-Built Drawing For Pond | 10d | 2027-07-01 | 2027-07-12 | T/C-DPO SS, MS-MO-20, MS-MO-50 |
| HO-180 |  | Submission As-Built Drawing For Irrigation Network | 10d | 2027-07-01 | 2027-07-12 | T/C-IR SS |
| HO-200 |  | Submission As-Built Drawing For Storm Network | 10d | 2027-07-01 | 2027-07-12 | T/C-SD SS |
| HO-210 |  | Submission As-Built Drawing For Utility Buildings | 8d | 2027-07-11 | 2027-07-19 | CO-UB-CR-360, CO-SU-FE-N-EL-270, HO-120 FF, T/C-CTV10 FF, T/C-CTV |
| HO-170 |  | Submission As-Built Drawing For Medium Voltage Network | 7d | 2027-07-15 | 2027-07-22 | T/C-MV SS, TC-LV-100 |
| HO-190 |  | As-Built Drawing For Potable Water Network | 7d | 2027-07-15 | 2027-07-22 | T/C-PW SS, T/C-TSE-10 |
|  | 1 | **De-Mobilization Works** |  | 2027-06-28 | 2027-07-18 |  |
| HO-230 |  | Remove Temporary Car Shades | 10d | 2027-06-28 | 2027-07-08 | T/C-RD SS, T/C-RD FF |
| HO-220 |  | Removing Portable Caravan | 7d | 2027-07-01 | 2027-07-08 | T/C-RD SS, T/C-RD FF |
| HO-120 |  | Remove material stock & Storage area | 8d | 2027-07-10 | 2027-07-18 | HO-220, T/C-RD SS, T/C-RD FF |
|  | 3 | **Handing Over** |  | 2027-06-30 | 2027-07-22 |  |
| HO-240 |  | Final Walkthrough and Inspection | 8d | 2027-06-30 | 2027-07-08 | T/C-RD SS, T/C-RD FF |
| HO-250 |  | Review B.O.Q Qty. to ensure compliance with the actual status | 8d | 2027-06-30 | 2027-07-08 | T/C-RD SS, T/C-RD FF |
| HO-260 |  | Review FIR Approval to ensure compliance with the actual status | 8d | 2027-06-30 | 2027-07-08 | T/C-RD SS, T/C-RD FF |
| HO-270 |  | Review the sample drawing to ensure compliance with the actual status | 8d | 2027-06-30 | 2027-07-08 | T/C-RD SS, T/C-RD FF |
| HO-280 |  | Punch List Completion | 8d | 2027-07-10 | 2027-07-18 | HO-270, T/C-RD SS, T/C-RD FF |
| HO-110 |  | Final Testing Work | 7d | 2027-07-15 | 2027-07-22 | T/C-SD, T/C-RD SS, T/C-RD FF |

## Version 6 (data date 2026-11-09, saved 2026-11-11, file DHRT-01-001-BL00.R01-53update9-11-2026.xer)

Last finish 2027-07-22 → 2027-07-27 (+5d). Complete tasks 302 → 380.

Changed:

| ID | Task | Start | Finish | Total float | Other |
| --- | --- | --- | --- | --- | --- |
| MS | **Key Milestones** |  | 2027-07-22 → 2027-07-27 (+5d) |  |  |
| CM | **Contractual Milestones** |  | 2027-07-22 → 2027-07-27 (+5d) |  |  |
| MS-CF-ENG | Completion of Submitting and Approval of Shopdrawing and Materials | 2026-11-29 → 2026-12-06 (+7d) | 2026-11-29 → 2026-12-06 (+7d) | none → -115d |  |
| MS-CF-SW | Completion of Construction Works for Sewage Network | 2027-03-15 → 2027-03-22 (+7d) | 2027-03-15 → 2027-03-22 (+7d) | none → -101d |  |
| MS-CF-MV | Completion of Construction Works for Medium Voltage Network | 2027-04-24 → 2027-05-01 (+7d) | 2027-04-24 → 2027-05-01 (+7d) | none → -86d |  |
| MS-CF-IR | Completion of Construction Works for Irrigation Network | 2027-05-25 → 2027-05-11 (-14d) | 2027-05-25 → 2027-05-11 (-14d) | none → -74d |  |
| MS-CF-PW | Completion of Construction Works for Potable Water Network | 2027-05-25 → 2027-05-11 (-14d) | 2027-05-25 → 2027-05-11 (-14d) | none → -74d |  |
| MS-MO-20 | Completion of Storm Drainage Ponds | 2027-05-12 → 2027-05-25 (+13d) | 2027-05-12 → 2027-05-25 (+13d) | none → -107d |  |
| MS-CF-LO | Completion of Construction Works for Low Voltage Network | 2027-05-25 → 2027-05-26 (+1d) | 2027-05-25 → 2027-05-26 (+1d) | none → -82d |  |
| MS-CF-RD | Completion of Construction Works for Road Works | 2027-05-25 → 2027-05-27 (+2d) | 2027-05-25 → 2027-05-27 (+2d) | none → -84d |  |
| MS-CF-SD | Completion of Construction Works for Storm Drainage Network | 2027-05-24 → 2027-05-31 (+7d) | 2027-05-24 → 2027-05-31 (+7d) | none → -86d |  |
| MS-CF-SL | Completion of Construction Works for Street Lighting Network | 2027-05-24 → 2027-05-31 (+7d) | 2027-05-24 → 2027-05-31 (+7d) | none → -86d |  |
| MS-CF-TSE | Completion of Construction Works for Treated Sewage Effluent Network | 2027-06-12 → 2027-06-03 (-9d) | 2027-06-12 → 2027-06-03 (-9d) | none → -70d |  |
| MS-MO-10 | Completion of Sewage Pump Station | 2027-06-30 → 2027-06-24 (-6d) | 2027-06-30 → 2027-06-24 (-6d) | none → -88d |  |
| MS-MO-50 | Completion of Water Pump Station | 2027-06-30 → 2027-06-24 (-6d) | 2027-06-30 → 2027-06-24 (-6d) | none → -107d |  |
| MS-MO-60 | Completion of Irrigation and Potable Tank | 2027-06-27 → 2027-06-30 (+3d) | 2027-06-27 → 2027-06-30 (+3d) | none → -93d |  |
| MS-CF-PF | Project Completion Date | 2027-07-22 → 2027-07-27 (+5d) | 2027-07-22 → 2027-07-27 (+5d) | none → -116d |  |
| CM1 | **Control Milestones** |  | 2026-11-02 → 2026-11-09 (+7d) |  |  |
| 2 | **The Employer** |  | 2026-11-02 → 2026-11-09 (+7d) |  |  |
| MS-MM-100 | Right of Access and Possession of theï¿½Site |  |  |  | was named Right of Access and Possession of the Site |
| MS-MM-120 | Receipt of Advance Payment for the Project From The Employer | 2026-11-02 → 2026-11-09 (+7d) | 2026-11-02 → 2026-11-09 (+7d) | none → -60d |  |
| ENG | **Engineering Works** |  | 2026-11-29 → 2026-12-06 (+7d) |  |  |
| SD11 | **Material Submittals and Approvals** |  | 2026-11-29 → 2026-12-06 (+7d) |  |  |
| ENG-MT-SD-ML-S-100 | Material Submittal for Manholes of Storm Drainage Network |  |  |  | resources none → physical units [59.54 h] |
| ENG-MT-SD-ML-S-110 | Material Submittal for Main Line Pipes of Storm Drainage Network |  |  |  | resources none → physical units [59.54 h] |
| ENG-MT-SD-CB-S-100 | Material Submittal for Catch Basins of Storm Drainage Network |  |  |  | resources none → physical units [59.54 h] |
| ENG-MT-SD-CB-S-110 | Material Submittal for Catch Basin Pipes of Storm Drainage Network |  |  |  | resources none → physical units [59.54 h] |
| ENG-MT-DPO-CV-S-100 | Material Submittal for Materials of Storm Drainage Ponds |  |  |  | resources none → physical units [59.54 h] |
| ENG-MT-SD-TF-S-100 | Material Submittal for Manhole Covers of Storm Drainage Network |  |  |  | resources none → physical units [59.54 h] |
| ENG-MT-SD-TF-S-110 | Material Submittal for Catch Basin Covers of Storm Drainage Network |  |  |  | resources none → physical units [59.54 h] |
| ENG-MT-SD-ML-A-100 | Material Approval for Manholes of Storm Drainage Network |  |  |  | resources MH depth 1.5 - 2.5m; MH depth 2.5 - 3.5m; MH depth 3.5 - 4.5m; MH depth > 4.50m; MH depth 2.5 -3.5m; MH depth > 3.50m → MH depth 1.5 - 2.5m; MH depth 2.5 - 3.5m; MH depth 3.5 - 4.5m; MH depth > 4.50m; MH depth 2.5 -3.5m; MH depth > 3.50m; physical units [51.03 h] |
| ENG-MT-SD-ML-A-110 | Material Approval for Main Line Pipes of Storm Drainage Network |  |  |  | resources Depth Between 0m to 1.50m; Depth Between 1.50m to 2.50m; Depth Between 2.50m to 3.50m; Depth > 3.50m; Depth Between 3.50m to 4.50m; Depth > 4.50m; GRP Pipe, 900mm diameter with Depth Between 3.51m to 4.50m → Depth Between 0m to 1.50m; Depth Between 1.50m to 2.50m; Depth Between 2.50m to 3.50m; Depth > 3.50m; Depth Between 3.50m to 4.50m; Depth > 4.50m; GRP Pipe, 900mm diameter with Depth Between 3.51m to 4.50m; physical units [51.03 h] |
| ENG-MT-SD-CB-A-100 | Material Approval for Catch Basins of Storm Drainage Network |  |  |  | resources Single Catch Basin 1000mm x 1000mm; Double Catch Basin 1200mm x 2300mm → Single Catch Basin 1000mm x 1000mm; Double Catch Basin 1200mm x 2300mm; physical units [51.03 h] |
| ENG-MT-SD-CB-A-110 | Material Approval for Catch Basin Pipes of Storm Drainage Network |  |  |  | resources Depth Between 0m to 1.50m; Depth Between 1.50m to 2.50m; Depth Between 2.50m to 3.50m; Depth > 3.50m; Depth Between 3.50m to 4.50m; Depth > 4.50m; GRP Pipe, 900mm diameter with Depth Between 3.51m to 4.50m → Depth Between 0m to 1.50m; Depth Between 1.50m to 2.50m; Depth Between 2.50m to 3.50m; Depth > 3.50m; Depth Between 3.50m to 4.50m; Depth > 4.50m; GRP Pipe, 900mm diameter with Depth Between 3.51m to 4.50m; physical units [51.03 h] |
| ENG-MT-DPO-CV-A-110 | Material Approval for Materials of Storm Drainage Ponds |  |  |  | resources Finished grouted riprap for Pond 300mm as per drawings → Finished grouted riprap for Pond 300mm as per drawings; physical units [51.03 h] |
| ENG-MT-SD-TF-A-100 | Material Approval for Manhole Covers of Storm Drainage Network |  |  |  | resources MH depth 1.5 - 2.5m; MH depth 2.5 - 3.5m; MH depth 3.5 - 4.5m; MH depth > 4.50m; MH depth 2.5 -3.5m; MH depth > 3.50m → MH depth 1.5 - 2.5m; MH depth 2.5 - 3.5m; MH depth 3.5 - 4.5m; MH depth > 4.50m; MH depth 2.5 -3.5m; MH depth > 3.50m; physical units [51.03 h] |
| ENG-MT-SD-TF-A-110 | Material Approval for Catch Basin Covers of Storm Drainage Network |  |  |  | resources Single Catch Basin 1000mm x 1000mm; Double Catch Basin 1200mm x 2300mm → Single Catch Basin 1000mm x 1000mm; Double Catch Basin 1200mm x 2300mm; physical units [51.03 h] |
| ENG-MT-SW-ML-S-100 | Material Submittal for Manholes of Sewage Network |  |  |  | resources none → physical units [59.54 h] |
| ENG-MT-SW-ML-S-110 | Material Submittal for Main Line Pipes of Sewage Network |  |  |  | resources none → physical units [59.54 h] |
| ENG-MT-SW-TF-S-100 | Material Submittal for Manhole Covers of Sewage Network |  |  |  | resources none → physical units [59.54 h] |
| ENG-MT-SW-ML-A-100 | Material Approval for Manholes of Sewage Network |  |  |  | resources Depth Between 0m to 1.50m; Depth Between 1.50m to 2.50m; Depth > 2.50m; Depth Between 2.50m to 3.50m; Depth Between 3.50m to 4.50m; Depth Between 4.50m to 5.50m; Depth > 5.50m; HDPE Force Main (PE 100, SDR 11, PN 16 bar) DN 160 mm diameter, in trenches depth: 0- 1.5m; HDPE Force Main (PE 100, SDR 11, PN 16 bar) DN 160 mm diameter, in trenches depth: 1.51- 2.5m; Air valves with dia 50 mm; Gate valves Dia 50 mm; Air valve chamber (1000x 1000 mm); Depth: 0 - 1.5m; Depth: 1.51 - 2.5m; Depth: 2.51 - 3.5m; Depth: 3.51 - 4.5m; Depth: 4.51 - 5.5m → Depth Between 0m to 1.50m; Depth Between 1.50m to 2.50m; Depth > 2.50m; Depth Between 2.50m to 3.50m; Depth Between 3.50m to 4.50m; Depth Between 4.50m to 5.50m; Depth > 5.50m; HDPE Force Main (PE 100, SDR 11, PN 16 bar) DN 160 mm diameter, in trenches depth: 0- 1.5m; HDPE Force Main (PE 100, SDR 11, PN 16 bar) DN 160 mm diameter, in trenches depth: 1.51- 2.5m; Air valves with dia 50 mm; Gate valves Dia 50 mm; Air valve chamber (1000x 1000 mm); Depth: 0 - 1.5m; Depth: 1.51 - 2.5m; Depth: 2.51 - 3.5m; Depth: 3.51 - 4.5m; Depth: 4.51 - 5.5m; physical units [51.03 h] |
| ENG-MT-SW-ML-A-110 | Material Approval for Main Line Pipes of Sewage Network |  |  |  | resources none → physical units [59.54 h] |
| ENG-MT-SW-TF-A-100 | Material Approval for Manhole Covers of Sewage Network |  |  |  | resources Depth: 0 - 1.5m; Depth: 1.51 - 2.5m; Depth: 2.51 - 3.5m; Depth: 3.51 - 4.5m; Depth: 4.51 - 5.5m; Depth > 5.50m → Depth: 0 - 1.5m; Depth: 1.51 - 2.5m; Depth: 2.51 - 3.5m; Depth: 3.51 - 4.5m; Depth: 4.51 - 5.5m; Depth > 5.50m; physical units [51.03 h] |
| ENG-MT-IR-ML-S-120 | Material Submittal for Materials of Treated Sewage Effluent (TSE) |  |  |  | resources none → physical units [59.54 h] |
| ENG-MT-IR-ML-A-120 | Material Approval for Materials of Treated Sewage Effluent (TSE) |  |  |  | resources Depth Between 0m to 1.50m; Depth Between 1.50m to 2.50m; Depth > 2.50m; Gate valves dia 50 mm; Gate valves dia 100 mm; Gate valves dia 150 mm; Gate valves dia 200 mm; Air valves with dia 50 mm; Washout valve dia 100 mm; Wash out chamber (2500x 2500mm); Air valve chamber (1000x 1000 mm); Flow meter chamber (1500x 3000 mm); Flow meter dia 150 mm; Glass Fused Bolted (GLS) 1500 m3 Tank with associated accessories & manufacturer recommendation for the foundation → Depth Between 0m to 1.50m; Depth Between 1.50m to 2.50m; Depth > 2.50m; Gate valves dia 50 mm; Gate valves dia 100 mm; Gate valves dia 150 mm; Gate valves dia 200 mm; Air valves with dia 50 mm; Washout valve dia 100 mm; Wash out chamber (2500x 2500mm); Air valve chamber (1000x 1000 mm); Flow meter chamber (1500x 3000 mm); Flow meter dia 150 mm; Glass Fused Bolted (GLS) 1500 m3 Tank with associated accessories & manufacturer recommendation for the foundation; physical units [51.03 h] |
| ENG-MT-PW-ML-S-100 | Material Submittal for Main Line Pipes and Materials of Potable Water Network |  |  |  | resources none → physical units [59.54 h] |
| ENG-MT-PW-ML-S-110 | Material Submittal for Main Line Valves of Potable Water Network |  |  |  | resources none → physical units [59.54 h] |
| ENG-MT-PW-FH-S-100 | Material Submittal for Fire Hydrant of Potable Water Network |  |  |  | resources none → physical units [59.54 h] |
| ENG-MT-PW-TF-S-100 | Material Submittal for Surface Box of Potable Water Network |  |  |  | resources none → physical units [59.54 h] |
| ENG-MT-PW-ML-A-100 | Material Approval for Main Line Pipes and Materials of Potable Water Network |  |  |  | resources Depth Between 0m to 1.50m; Depth Between 1.50m to 2.50m; Depth > 2.50m; Glass Fused Bolted (GLS) 1500 m3 Tank with associated accessories & manufacturer recommendation for the foundation → Depth Between 0m to 1.50m; Depth Between 1.50m to 2.50m; Depth > 2.50m; Glass Fused Bolted (GLS) 1500 m3 Tank with associated accessories & manufacturer recommendation for the foundation; physical units [51.03 h] |
| ENG-MT-PW-ML-A-110 | Material Approval for Valves of Potable Water Network |  |  |  | resources Gate valves Dia 50 mm; Gate valves Dia 100 mm; Gate valves Dia 150 mm; Gate valves Dia 250 mm; Air valves with Dia 50 mm; Washout valve Dia 100 mm; Wash out chamber (2500x 2500mm); Air valve chamber (1000x 1000 mm); Flow meter chamber (1500x 2500 mm); Flow meter dia 100 mm → Gate valves Dia 50 mm; Gate valves Dia 100 mm; Gate valves Dia 150 mm; Gate valves Dia 250 mm; Air valves with Dia 50 mm; Washout valve Dia 100 mm; Wash out chamber (2500x 2500mm); Air valve chamber (1000x 1000 mm); Flow meter chamber (1500x 2500 mm); Flow meter dia 100 mm; physical units [51.03 h] |
| ENG-MT-PW-FH-A-100 | Material Approval for Fire Hydrants of Potable Water Network |  |  |  | resources 3-outlet fire hydrant (2 x 2.5 inch and 1 x 4.5 inch) in the form of a separate dry vacuum cylinder, complete according to drawings. → 3-outlet fire hydrant (2 x 2.5 inch and 1 x 4.5 inch) in the form of a separate dry vacuum cylinder, complete according to drawings.; physical units [51.03 h] |
| ENG-MT-PW-TF-A-100 | Material Approval for Surface Box of Potable Water Network |  |  |  | resources Depth Between 0m to 1.50m; Depth Between 1.50m to 2.50m; Depth > 2.50m → Depth Between 0m to 1.50m; Depth Between 1.50m to 2.50m; Depth > 2.50m; physical units [51.03 h] |
| ENG-MT-IR-ML-S-100 | Material Submittal for Main Line Pipes of Irrigation Network |  |  |  | resources none → physical units [59.54 h] |
| ENG-MT-IR-ML-S-110 | Material Submittal for Main Line Valves of Irrigation Network |  |  |  | resources none → physical units [59.54 h] |
| ENG-MT-IR-ML-A-100 | Material Approval for Main Line Pipes of Irrigation Network |  |  |  | resources pipe line O.D 32 mm PN 10, in depth 0 to 1.5 m; pipe line O.D 40 mm PN 10, in depth 0 to 1.5 m; pipe line O.D 50 mm PN 10, in depth 0 to 1.5 m → pipe line O.D 32 mm PN 10, in depth 0 to 1.5 m; pipe line O.D 40 mm PN 10, in depth 0 to 1.5 m; pipe line O.D 50 mm PN 10, in depth 0 to 1.5 m; physical units [51.03 h] |
| ENG-MT-IR-ML-A-110 | Material Approval for Valves of Irrigation Network |  |  |  | resources Gate valve 50 mm PN16; Direct Burried Gate valve 40 mm PN16; Pressure–compensating bubblers 110 Lit/Hr; Flushing Bronze gate valve dia 1.5" inside PVC box; Air release valve 1.5" inside PVC box; Extra flexible pressure compensating on surface inline dripline`s, O.D. is 16.1 mm; Electrical Solenoid Valve ( 1.5") inside PVC box; Electrical Solenoid Valve ( 2") inside PVC box; Quick coupling valve 1" inside a round valve box 10" size with a manual gate valve, hose swivel and key with all accessories; Advanced Irrigation controller subject to client approval, can connect with Centarl Control system and cabable to integrate with Smart City systems,BMS or Scada system ,Can record the real flow rate per stations; Decoder cables 12 AWG between valves and controllers, The cables shall be pulled through 32? UPVC conduit and inspection 10" round valve box every 100 meters, as per standard specification and drawings; Preparing the irrigation program for the entire system and providing technical services for monitoring and controlling the central irrigation systems by linking the controller with the Main Program System (by GSM). → Gate valve 50 mm PN16; Direct Burried Gate valve 40 mm PN16; Pressure–compensating bubblers 110 Lit/Hr; Flushing Bronze gate valve dia 1.5" inside PVC box; Air release valve 1.5" inside PVC box; Extra flexible pressure compensating on surface inline dripline`s, O.D. is 16.1 mm; Electrical Solenoid Valve ( 1.5") inside PVC box; Electrical Solenoid Valve ( 2") inside PVC box; Quick coupling valve 1" inside a round valve box 10" size with a manual gate valve, hose swivel and key with all accessories; Advanced Irrigation controller subject to client approval, can connect with Centarl Control system and cabable to integrate with Smart City systems,BMS or Scada system ,Can record the real flow rate per stations; Decoder cables 12 AWG between valves and controllers, The cables shall be pulled through 32? UPVC conduit and inspection 10" round valve box every 100 meters, as per standard specification and drawings; Preparing the irrigation program for the entire system and providing technical services for monitoring and controlling the central irrigation systems by linking the controller with the Main Program System (by GSM).; physical units [51.03 h] |
| ENG-MT-MV-ML-S-100 | Material Submittal for Medium Voltage Materials of Medium Voltage Network |  |  |  | resources none → physical units [59.54 h] |
| ENG-MT-MV-ML-A-100 | Material Approval for Medium Voltage Materials of Medium Voltage Network |  |  |  | resources Excavation for Trench size 40cm wide and 80cm deep (for 1 cable); Excavation for Trench Size 60cm wide and 80cm deep (for 2 cables); Excavation for Trench Size 90cm wide and 80cm deep (for 3 cables); Excavation for Trench Size 180cm wide and 80cm deep (for 6 cables); Excavation for Trench Size 210 cm wide and 80cm deep (for 7 cables); Excavation for Trench Size 240cm wide and 80cm deep (for 8 cables); Duct bank for (33) cables; Duct bank for (21) cables; Duct bank for (15) cables; HV Cable Road Crossing → Excavation for Trench size 40cm wide and 80cm deep (for 1 cable); Excavation for Trench Size 60cm wide and 80cm deep (for 2 cables); Excavation for Trench Size 90cm wide and 80cm deep (for 3 cables); Excavation for Trench Size 180cm wide and 80cm deep (for 6 cables); Excavation for Trench Size 210 cm wide and 80cm deep (for 7 cables); Excavation for Trench Size 240cm wide and 80cm deep (for 8 cables); Duct bank for (33) cables; Duct bank for (21) cables; Duct bank for (15) cables; HV Cable Road Crossing; physical units [51.03 h] |
| PRO-LV-ML-S-100 | Material Submittal for Main Low Voltage Cables of Low Voltage Network |  |  |  | resources none → physical units [59.54 h] |
| PRO-LV-HC-S-100 | Material Submittal for Service Low Voltage Cables of Low Voltage Network |  |  |  | resources none → physical units [59.54 h] |
| PRO-LV-DP-S-100 | Material Submittal for Distribution Pillars of Low Voltage Network |  |  |  | resources none → physical units [59.54 h] |
| PRO-LV-DP-S-110 | Material Submittal for Low Voltage Earthing of Low Voltage Network |  |  |  | resources none → physical units [59.54 h] |
| PRO-LV-TT-S-100 | Material Submittal for Cable Lugs of Low Voltage Network |  |  |  | resources none → physical units [59.54 h] |
| PRO-LV-ML-A-100 | Material Approval for Main Low Voltage Cables of Low Voltage Network |  |  |  | resources Road crossing ducts, 2 ways (2 x 150mm HDPE); Road crossing ducts, 2 ways (2 x 110mm UPVC); Road crossing ducts, 3 ways (3 x 110mm UPVC); 4C-300mm2 CU/XLPE / PVC ARMORED CABLE; 4C-240mm2 CU/XLPE / PVC ARMORED CABLE; 4C-185mm2 CU/XLPE / PVC ARMORED CABLE; 4C-50mm2 CU/XLPE / PVC ARMORED CABLE; 4C-16mm2 CU/XLPE / PVC ARMORED CABLE; 4C-16MM2 CU/XLPE / PVC CABLE; 1Cx150sq.mm2,Cu, PVC wire; 1Cx120sq.mm2,Cu, PVC wire; 1Cx95sq.mm,Cu, PVC wire; 1Cx70sq.mm2,Cu, PVC wire; 1Cx25sq.mm2,Cu, PVC wire; 1Cx16sq.mm2,Cu, PVC wire; 1Cx10sq.mm2,Cu, PVC wire → Road crossing ducts, 2 ways (2 x 150mm HDPE); Road crossing ducts, 2 ways (2 x 110mm UPVC); Road crossing ducts, 3 ways (3 x 110mm UPVC); 4C-300mm2 CU/XLPE / PVC ARMORED CABLE; 4C-240mm2 CU/XLPE / PVC ARMORED CABLE; 4C-185mm2 CU/XLPE / PVC ARMORED CABLE; 4C-50mm2 CU/XLPE / PVC ARMORED CABLE; 4C-16mm2 CU/XLPE / PVC ARMORED CABLE; 4C-16MM2 CU/XLPE / PVC CABLE; 1Cx150sq.mm2,Cu, PVC wire; 1Cx120sq.mm2,Cu, PVC wire; 1Cx95sq.mm,Cu, PVC wire; 1Cx70sq.mm2,Cu, PVC wire; 1Cx25sq.mm2,Cu, PVC wire; 1Cx16sq.mm2,Cu, PVC wire; 1Cx10sq.mm2,Cu, PVC wire; physical units [51.03 h] |
| PRO-LV-HC-A-100 | Material Approval for Service Low Voltage Cables of Low Voltage Network |  |  |  | resources Road crossing ducts, 2 ways (2 x 150mm HDPE); Road crossing ducts, 2 ways (2 x 110mm UPVC); Road crossing ducts, 3 ways (3 x 110mm UPVC); 4C-300mm2 CU/XLPE / PVC ARMORED CABLE; 4C-240mm2 CU/XLPE / PVC ARMORED CABLE; 4C-185mm2 CU/XLPE / PVC ARMORED CABLE; 4C-50mm2 CU/XLPE / PVC ARMORED CABLE; 4C-16mm2 CU/XLPE / PVC ARMORED CABLE; 4C-16MM2 CU/XLPE / PVC CABLE; 1Cx150sq.mm2,Cu, PVC wire; 1Cx120sq.mm2,Cu, PVC wire; 1Cx95sq.mm,Cu, PVC wire; 1Cx70sq.mm2,Cu, PVC wire; 1Cx25sq.mm2,Cu, PVC wire; 1Cx16sq.mm2,Cu, PVC wire; 1Cx10sq.mm2,Cu, PVC wire → Road crossing ducts, 2 ways (2 x 150mm HDPE); Road crossing ducts, 2 ways (2 x 110mm UPVC); Road crossing ducts, 3 ways (3 x 110mm UPVC); 4C-300mm2 CU/XLPE / PVC ARMORED CABLE; 4C-240mm2 CU/XLPE / PVC ARMORED CABLE; 4C-185mm2 CU/XLPE / PVC ARMORED CABLE; 4C-50mm2 CU/XLPE / PVC ARMORED CABLE; 4C-16mm2 CU/XLPE / PVC ARMORED CABLE; 4C-16MM2 CU/XLPE / PVC CABLE; 1Cx150sq.mm2,Cu, PVC wire; 1Cx120sq.mm2,Cu, PVC wire; 1Cx95sq.mm,Cu, PVC wire; 1Cx70sq.mm2,Cu, PVC wire; 1Cx25sq.mm2,Cu, PVC wire; 1Cx16sq.mm2,Cu, PVC wire; 1Cx10sq.mm2,Cu, PVC wire; physical units [51.03 h] |
| PRO-LV-DP-A-100 | Material Approval for Distribution Pillars of Low Voltage Network |  |  |  | resources Supply and installation of KWH meter mounting frame including concrete block for installation of KWH meter according to the standards and specifications of SEC. → Supply and installation of KWH meter mounting frame including concrete block for installation of KWH meter according to the standards and specifications of SEC.; physical units [51.03 h] |
| PRO-LV-DP-A-110 | Material Approval for Low Voltage Earthing of Low Voltage Network |  |  |  | resources Road crossing ducts, 2 ways (2 x 150mm HDPE); Road crossing ducts, 2 ways (2 x 110mm UPVC); Road crossing ducts, 3 ways (3 x 110mm UPVC); 4C-300mm2 CU/XLPE / PVC ARMORED CABLE; 4C-240mm2 CU/XLPE / PVC ARMORED CABLE; 4C-185mm2 CU/XLPE / PVC ARMORED CABLE; 4C-50mm2 CU/XLPE / PVC ARMORED CABLE; 4C-16mm2 CU/XLPE / PVC ARMORED CABLE; 4C-16MM2 CU/XLPE / PVC CABLE; 1Cx150sq.mm2,Cu, PVC wire; 1Cx120sq.mm2,Cu, PVC wire; 1Cx95sq.mm,Cu, PVC wire; 1Cx70sq.mm2,Cu, PVC wire; 1Cx25sq.mm2,Cu, PVC wire; 1Cx16sq.mm2,Cu, PVC wire; 1Cx10sq.mm2,Cu, PVC wire → Road crossing ducts, 2 ways (2 x 150mm HDPE); Road crossing ducts, 2 ways (2 x 110mm UPVC); Road crossing ducts, 3 ways (3 x 110mm UPVC); 4C-300mm2 CU/XLPE / PVC ARMORED CABLE; 4C-240mm2 CU/XLPE / PVC ARMORED CABLE; 4C-185mm2 CU/XLPE / PVC ARMORED CABLE; 4C-50mm2 CU/XLPE / PVC ARMORED CABLE; 4C-16mm2 CU/XLPE / PVC ARMORED CABLE; 4C-16MM2 CU/XLPE / PVC CABLE; 1Cx150sq.mm2,Cu, PVC wire; 1Cx120sq.mm2,Cu, PVC wire; 1Cx95sq.mm,Cu, PVC wire; 1Cx70sq.mm2,Cu, PVC wire; 1Cx25sq.mm2,Cu, PVC wire; 1Cx16sq.mm2,Cu, PVC wire; 1Cx10sq.mm2,Cu, PVC wire; physical units [51.03 h] |
| PRO-LV-TT-A-100 | Material Approval for Cable Lugs of Low Voltage Network |  |  |  | resources none → physical units [59.54 h] |
| ENG-MT-SL-ML-S-100 | Material Submittal for Lighting Cables of Street Lighting Network |  |  |  | resources none → physical units [59.54 h] |

| ID | Task | Start | Finish | Total float | Other |
| --- | --- | --- | --- | --- | --- |
| ENG-MT-SL-S-100 | Material Submittal for Lighting Poles Concrete Foundations of Street Lighting Network |  |  |  | resources none → physical units [59.54 h] |
| ENG-MT-SL-S-110 | Material Submittal for Lighting Poles of Street Lighting Network |  |  |  | resources none → physical units [59.54 h] |
| ENG-MT-SL-S-120 | Material Submittal for Lighting Fixtures of Street Lighting Network |  |  |  | resources none → physical units [59.54 h] |
| ENG-MT-SL-DB-S-100 | Material Submittal for Lighting Distrubution Panel Boards of Street Lighting Network |  |  |  | resources none → physical units [59.54 h] |
| ENG-MT-SL-TF-S-100 | Material Submittal for Fuse Boxes of Street Lighting Network |  |  |  | resources none → physical units [59.54 h] |
| ENG-MT-SL-TF-S-110 | Material Submittal for Cable Lugs of Street Lighting Network |  |  |  | resources none → physical units [59.54 h] |
| ENG-MT-SL-ES-S-100 | Material Submittal for Lighting Earthing of Street Lighting Network |  |  |  | resources none → physical units [59.54 h] |
| ENG-MT-SL-ML-A-100 | Material Approval for Lighting Cables of Street Lighting Network |  |  |  | resources Lighting poles with 1 arm, height of (12) meters, including the power distribution box, cables, and RCC foundation.; Lighting poles with 2 arms, height of (12) meters, including the power distribution box, cables, and RCC foundation. → Lighting poles with 1 arm, height of (12) meters, including the power distribution box, cables, and RCC foundation.; Lighting poles with 2 arms, height of (12) meters, including the power distribution box, cables, and RCC foundation.; physical units [51.03 h] |
| ENG-MT-SL-A-100 | Material Approval for Lighting Poles Concrete Foundations of Street Lighting Network |  |  |  | resources Lighting poles with 1 arm, height of (12) meters, including the power distribution box, cables, and RCC foundation.; Lighting poles with 2 arms, height of (12) meters, including the power distribution box, cables, and RCC foundation. → Lighting poles with 1 arm, height of (12) meters, including the power distribution box, cables, and RCC foundation.; Lighting poles with 2 arms, height of (12) meters, including the power distribution box, cables, and RCC foundation.; physical units [51.03 h] |
| ENG-MT-SL-A-110 | Material Approval for Lighting Poles of Street Lighting Network |  |  |  | resources Lighting poles with 1 arm, height of (12) meters, including the power distribution box, cables, and RCC foundation.; Lighting poles with 2 arms, height of (12) meters, including the power distribution box, cables, and RCC foundation. → Lighting poles with 1 arm, height of (12) meters, including the power distribution box, cables, and RCC foundation.; Lighting poles with 2 arms, height of (12) meters, including the power distribution box, cables, and RCC foundation.; physical units [51.03 h] |
| ENG-MT-SL-A-120 | Material Approval for Lighting Fixtures of Street Lighting Network |  |  |  | resources Street Lighting( LED) Luminaire of Output ? 20,965 lumen complete with control gear and lamp, (129.1) WATT. → Street Lighting( LED) Luminaire of Output ? 20,965 lumen complete with control gear and lamp, (129.1) WATT.; physical units [51.03 h] |
| ENG-MT-SL-DB-A-100 | Material Approval for Distrubution Panel Boards of Street Lighting Network |  |  |  | resources Street Lighting panels LCP (01) → Street Lighting panels LCP (01); physical units [51.03 h] |
| ENG-MT-SL-ES-A-100 | Material Approval for Lighting Earthing of Street Lighting Network |  |  |  | resources Including earthing of lighting poles, masts, feeder pillars, unit substations and LV feeders. → Including earthing of lighting poles, masts, feeder pillars, unit substations and LV feeders.; physical units [51.03 h] |
| ENG-MT-SL-TF-A-100 | Material Approval for Fuse Boxes of Street Lighting Network |  |  |  | resources Lighting poles with 1 arm, height of (12) meters, including the power distribution box, cables, and RCC foundation.; Lighting poles with 2 arms, height of (12) meters, including the power distribution box, cables, and RCC foundation. → Lighting poles with 1 arm, height of (12) meters, including the power distribution box, cables, and RCC foundation.; Lighting poles with 2 arms, height of (12) meters, including the power distribution box, cables, and RCC foundation.; physical units [51.03 h] |
| ENG-MT-SL-TF-A-110 | Material Approval for Cable Lugs of Street Lighting Network |  |  |  | resources Lighting poles with 1 arm, height of (12) meters, including the power distribution box, cables, and RCC foundation.; Lighting poles with 2 arms, height of (12) meters, including the power distribution box, cables, and RCC foundation. → Lighting poles with 1 arm, height of (12) meters, including the power distribution box, cables, and RCC foundation.; Lighting poles with 2 arms, height of (12) meters, including the power distribution box, cables, and RCC foundation.; physical units [51.03 h] |
| ENG-MT-TE-S-100 | Material Submittal for Ducts of Telecom Network |  |  |  | resources none → physical units [59.54 h] |
| ENG-MT-TE-S-110 | Material Submittal for Manholes of Telecom Network |  |  |  | resources none → physical units [59.54 h] |
| ENG-MT-CTV-S-100 | Material Submittal for Materials of CCTV, Telephone, MSN, and Access Control Systems |  |  |  | resources none → physical units [59.54 h] |
| ENG-MT-TE-A-100 | Material Approval for Ducts of Telecom Network |  |  |  | resources 2-ways ducts, 32mm diameter; 2x3-ways ducts, 50mm diameter; 8-ways ducts, 6 x 160mm & 2 x 100mm; 2 PVC ducts 150x200 mm (60mm diameter); 4 PVC ducts 600x150 mm (60mm diameter); 8 PVC ducts 1000x300 mm (60mm diameter); 6 PVC ducts 600x800 mm (60mm diameter) → 2-ways ducts, 32mm diameter; 2x3-ways ducts, 50mm diameter; 8-ways ducts, 6 x 160mm & 2 x 100mm; 2 PVC ducts 150x200 mm (60mm diameter); 4 PVC ducts 600x150 mm (60mm diameter); 8 PVC ducts 1000x300 mm (60mm diameter); 6 PVC ducts 600x800 mm (60mm diameter); physical units [51.03 h] |
| ENG-MT-TE-A-110 | Material Approval for Manholes of Telecom Network |  |  |  | resources Manhole Type 2 (1600 x 1600 x 2000); Manhole Type 3 (1200 x 1200 x 2000); Manhole Type 1 (800 x 600 x 1200) → Manhole Type 2 (1600 x 1600 x 2000); Manhole Type 3 (1200 x 1200 x 2000); Manhole Type 1 (800 x 600 x 1200); physical units [51.03 h] |
| ENG-MT-CTV-A-100 | Material Approval for for Materials of CCTV, Telephone, MSN, and Access Control Systems |  |  |  | resources NVR Server with RAID (5, 6 or 10) to record all cameras storage 80TB with all hardware / software / licenses etc.; VMS Server with RAID (5, 6 or 10) complete Hardware / Software with one Color Laser Printer and all associated accessories for central management.; Licenses for Cameras, Workstations and Keyboards; Work Station (MMI with two monitors each, for Monitoring for CCTV & ACS); Keyboard with joystick for CCTV with all accessories as per specification; Pole mounted IP( PoE) Fixed camera, 5MP,IP 66, IR illumination, 3-8mm varifocal, auto iris lens type; Wall mounted IP( PoE) Fixed camera, 5MP,IP 66, IR illumination, 3-8mm varifocal, auto iris lens type; 5MP Dome camera ceiling Mounted IP (PoE) indoor; 5MP PTZ Multi Sensor Camera IP(PoE) 360 Degree View Outdoor with accessories (IP 66); 8 Port Industrial PoE Switch 10/100BaseT (0 deg to +70 deg. Celsius); Filed Equipment cabinet (FEC), with fan and ventilation, NEMEX 4X ,door, minimum size (600x600x400mm), the cabinet/enclosure includes industrial switch and UPS.; IP Phone Communication server (hot standby) 50 Port equipped, Gateway, Gatekeeper, H.323, SIP, redundant Power etc.; IP Phone Voice gateway; Voice IP Phone; NMS Server for IP phone and NETWORK Elements; NMS Workstation; Firm Ware, software & licenses; Data Cable; Power Cable; Layer 3, 24 Port non-PoE switch10/1000BaseT/LX (-40 deg to +70 deg. Celsius), stack module and associated accessories for utility Telecom Server room; Layer 2, 24 Port non-PoE switch10/1000BaseT (-40 deg to +70 deg. Celsius), stack module and associated accessories for utility Telecom Server and Security Guard house room; Network Management System Server; Network Management System workstation; 42U rack dimension (W x H x L) 800 x 2000 x 1000 mm; 12U rack dimension (W x H x L) 600 x 625 x 600 mm; 06C Optical Fiber SM; 48C Optical Fiber SM; 48 Core Splice Closure; Optical fiber patch cord 5m; Data Cable (STP CAT 6A); 3C Power Cable armored 1.5mm2; 3C Power Cable armored 2.5 mm2; UTP CAT6A Patch Cord 1m/3m/5m; Access Control Unit; Access Card Reader; Magnetic Lock; Break Glass; Exit Push button; Door Sensor; Biometrics Reader; Smart Card Printer; Card Issue Work Station; Photographic Camera with stand; Interface modules with CCTV, Fire and other systems; 1-ways ducts, 6 x 50mm diameter; 6 PVC ducts 150x200 mm (60mm diameter) → NVR Server with RAID (5, 6 or 10) to record all cameras storage 80TB with all hardware / software / licenses etc.; VMS Server with RAID (5, 6 or 10) complete Hardware / Software with one Color Laser Printer and all associated accessories for central management.; Licenses for Cameras, Workstations and Keyboards; Work Station (MMI with two monitors each, for Monitoring for CCTV & ACS); Keyboard with joystick for CCTV with all accessories as per specification; Pole mounted IP( PoE) Fixed camera, 5MP,IP 66, IR illumination, 3-8mm varifocal, auto iris lens type; Wall mounted IP( PoE) Fixed camera, 5MP,IP 66, IR illumination, 3-8mm varifocal, auto iris lens type; 5MP Dome camera ceiling Mounted IP (PoE) indoor; 5MP PTZ Multi Sensor Camera IP(PoE) 360 Degree View Outdoor with accessories (IP 66); 8 Port Industrial PoE Switch 10/100BaseT (0 deg to +70 deg. Celsius); Filed Equipment cabinet (FEC), with fan and ventilation, NEMEX 4X ,door, minimum size (600x600x400mm), the cabinet/enclosure includes industrial switch and UPS.; IP Phone Communication server (hot standby) 50 Port equipped, Gateway, Gatekeeper, H.323, SIP, redundant Power etc.; IP Phone Voice gateway; Voice IP Phone; NMS Server for IP phone and NETWORK Elements; NMS Workstation; Firm Ware, software & licenses; Data Cable; Power Cable; Layer 3, 24 Port non-PoE switch10/1000BaseT/LX (-40 deg to +70 deg. Celsius), stack module and associated accessories for utility Telecom Server room; Layer 2, 24 Port non-PoE switch10/1000BaseT (-40 deg to +70 deg. Celsius), stack module and associated accessories for utility Telecom Server and Security Guard house room; Network Management System Server; Network Management System workstation; 42U rack dimension (W x H x L) 800 x 2000 x 1000 mm; 12U rack dimension (W x H x L) 600 x 625 x 600 mm; 06C Optical Fiber SM; 48C Optical Fiber SM; 48 Core Splice Closure; Optical fiber patch cord 5m; Data Cable (STP CAT 6A); 3C Power Cable armored 1.5mm2; 3C Power Cable armored 2.5 mm2; UTP CAT6A Patch Cord 1m/3m/5m; Access Control Unit; Access Card Reader; Magnetic Lock; Break Glass; Exit Push button; Door Sensor; Biometrics Reader; Smart Card Printer; Card Issue Work Station; Photographic Camera with stand; Interface modules with CCTV, Fire and other systems; 1-ways ducts, 6 x 50mm diameter; 6 PVC ducts 150x200 mm (60mm diameter); physical units [51.03 h] |
| ENG-MT-RD-S-100 | Material Submittal for Subgrade of Road Works |  |  |  | resources none → physical units [59.54 h] |
| ENG-MT-RD-S-110 | Material Submittal for Aggregate Base Course of Road Works |  |  |  | resources none → physical units [59.54 h] |
| ENG-MT-RD-S-120 | Material Submittal for Prime Coat of Road Works |  |  |  | resources none → physical units [59.54 h] |
| ENG-MT-RD-S-130 | Material Submittal for Asphaltic Base Course Layer of Road Works |  |  |  | resources none → physical units [59.54 h] |
| ENG-MT-RD-S-160 | Material Submittal for Asphaltic Wearing Course Layer for Roads Network |  |  |  | resources none → physical units [59.54 h] |
| ENG-MT-RD-S-170 | Material Submittal for Tack Coat Layer for Roads Network |  |  |  | resources none → physical units [59.54 h] |
| ENG-MT-RD-S-140 | Material Submittal for Interlock Tiles of Landscaping |  |  |  | resources none → physical units [59.54 h] |
| ENG-MT-RD-S-150 | Material Submittal for Curbstones of Landscaping |  |  |  | resources none → physical units [59.54 h] |
| ENG-MT-TS-S-100 | Material Submittal for Traffic Signs Boards of Road Works |  |  |  | resources none → physical units [59.54 h] |
| ENG-MT-TS-S-110 | Material Submittal for Road Markings of Road Works |  |  |  | resources none → physical units [59.54 h] |
| ENG-MT-RD-A-100 | Material Approval for Subgrade of Road Works |  |  |  | resources Excavations (including Roads , Plots and Pond); Embankments to the Site and Roads (including Roads , Plots and Pond); Subgrade → Excavations (including Roads , Plots and Pond); Embankments to the Site and Roads (including Roads , Plots and Pond); Subgrade; physical units [51.03 h] |
| ENG-MT-RD-A-110 | Material Approval for Aggregate Base Course of Road Works |  |  |  | resources Aggregate base course; Bituminous base course (Grading I - Class A), including Prime Coat (MC1); Bituminous concrete wearing course, (Grading I - Class A), including tack coat (RC2) → Aggregate base course; Bituminous base course (Grading I - Class A), including Prime Coat (MC1); Bituminous concrete wearing course, (Grading I - Class A), including tack coat (RC2); physical units [51.03 h] |
| ENG-MT-RD-A-120 | Material Approval for Prime Coat of Road Works |  |  |  | resources Bituminous base course (Grading I - Class A), including Prime Coat (MC1) → Bituminous base course (Grading I - Class A), including Prime Coat (MC1); physical units [51.03 h] |
| ENG-MT-RD-A-130 | Material Approval for Asphaltic Base Course Layer of Road Works |  |  |  | resources none → physical units [59.54 h] |
| ENG-MT-RD-A-160 | Material Approval for Asphaltic Wearing Course Layer for Roads Network |  |  |  | resources none → physical units [59.54 h] |
| ENG-MT-RD-A-170 | Material Approval for Tack Coat Layer for Roads Network |  |  |  | resources Bituminous concrete wearing course, (Grading I - Class A), including tack coat (RC2) → Bituminous concrete wearing course, (Grading I - Class A), including tack coat (RC2); physical units [51.03 h] |
| ENG-MT-RD-A-140 | Material Approval of Interlock Tiles for Landscaping |  |  |  | resources 60mm thick; 80mm thick → 60mm thick; 80mm thick; physical units [51.03 h] |
| ENG-MT-RD-A-150 | Material Approval of Curbstones for Landscaping |  |  |  | resources Precast Concrete Curbstone 150X300X900 Type (K1-A); Precast Concrete Curbstone 100X200X500 Type (K4); Precast Concrete Curbstone 150X300X500 Type (K1-B); Precast Concrete Curbstone Type (K1-C); Flush Kerb Type (D) → Precast Concrete Curbstone 150X300X900 Type (K1-A); Precast Concrete Curbstone 100X200X500 Type (K4); Precast Concrete Curbstone 150X300X500 Type (K1-B); Precast Concrete Curbstone Type (K1-C); Flush Kerb Type (D); physical units [51.03 h] |
| ENG-MT-TS-A-100 | Material Approval for Traffic Signs Boards of Road Works |  |  |  | resources Traffic signs, ground mounted, Sheet Aluminum, (breakaway) Single post IPE, with all accessories → Traffic signs, ground mounted, Sheet Aluminum, (breakaway) Single post IPE, with all accessories; physical units [51.03 h] |
| ENG-MT-TS-A-110 | Material Approval for Road Markings of Road Works |  |  |  | resources Retroreflective Thermoplastic White Traffic lines; Retroreflective Thermoplastic Yellow, Traffic lines; Precast Concrete Blister Warning Tactile Paver Brown Finish 300*300*60mm → Retroreflective Thermoplastic White Traffic lines; Retroreflective Thermoplastic Yellow, Traffic lines; Precast Concrete Blister Warning Tactile Paver Brown Finish 300*300*60mm; physical units [51.03 h] |
| ENG-MT-IR-ML-S-140 | Material Submittal for Softscape and Planting Works |  |  |  | resources none → physical units [59.54 h] |
| ENG-MT-IR-ML-S-150 | Material Submittal for Site Furnishings (Seating Bench,Stone Boulders and Gravel) |  |  |  | resources none → physical units [59.54 h] |
| ENG-MT-IR-ML-A-140 | Material Approval for Softscape and Planting Works |  |  |  | resources Neem Tree, T01 Tree; Cassia Glauca Tree, T02 Tree; Ponciana Tree, T03 Tree; Dodonaea Viscosa, S01 Shrubs 400-500mm, 4plant/m2; Vitex Angus-Cactus, S02 Shrubs 400-500mm, 5plant/m2; Pennisetum Rubrum , S03 Shrubs 400-500mm, 5plant/m2; sesuvium portulacastrum green carpet, GC01 Ground Cover; Catharanthus Roseus 150-200mm, GC02 Ground Cover → Neem Tree, T01 Tree; Cassia Glauca Tree, T02 Tree; Ponciana Tree, T03 Tree; Dodonaea Viscosa, S01 Shrubs 400-500mm, 4plant/m2; Vitex Angus-Cactus, S02 Shrubs 400-500mm, 5plant/m2; Pennisetum Rubrum , S03 Shrubs 400-500mm, 5plant/m2; sesuvium portulacastrum green carpet, GC01 Ground Cover; Catharanthus Roseus 150-200mm, GC02 Ground Cover; physical units [51.03 h] |
| ENG-MT-IR-ML-A-150 | Material Approval for Site Furnishings (Seating Bench,Stone Boulders and Gravel) |  |  |  | resources Seating Bench; Riyadh Stone Boulders 450mm thick; Gravel Mulch 150mm Beige; Gravel Mulch 150mm White; Gravel Ponds Bed - MARL MIX 500-600mm; Trash/ Recycle Bins → Seating Bench; Riyadh Stone Boulders 450mm thick; Gravel Mulch 150mm Beige; Gravel Mulch 150mm White; Gravel Ponds Bed - MARL MIX 500-600mm; Trash/ Recycle Bins; physical units [51.03 h] |
| ENG-MT-SLS-CV-S-100 | Material Submittal for Works for Water Pump Station |  |  |  | resources none → physical units [59.54 h] |
| ENG-MT-SLS-CV-A-110 | Material Approval for Works for Water Pump Station |  |  |  | resources 100 mm thickness lean concrete under the foundation; Foundation; Grade Beams; Slab on grade; Beams; Columns; Slabs; Lightweight Concrete Roof insulation as per Architect's specification; Hollow Concrete masonry unit, 150 mm thick wall for internal block; Insulated brickwork. with expanded polystyrene 200mm thick for External block; Hollow Concrete masonry unit, 300 mm thick wall for External block; 2 perpendicular layers of cold bitumen coats; 2 layer of 4mm HDPE membrane, 2 perpendicular layers cold bitumen coats; 1 layer EPOXY Paint 300 micron; Membrane fully bonded to prime deck and upstand; Geotextile Filter membrane uv resistance; 85mm thick thermal insulation; 1.5mm thick epdm waterproofing membrane; D1 - 1100 mm width x 2200 mm height; D4 - 1800 mm width x 3000 mm height; 1000 mm width x 2400 mm high (L1); Supply and install External plastering to walls and columns min. 15mm thick with cement mortar of specified grade including galvanized mesh, corner beads, angle beads, CE bonds to rough and smooth plaster complete the work as per drawing & specification.; Supply and install 2 coats of weatherproof paint at walls including one prime coat and two coats and putty to give smooth Surface as a base for paint including fiberglass tape to joints and all other accessories as per manufacturers approved specification; Supply and install internal plastering to walls and columns min. 15mm thick with cement mortar of specified grade including galvanized mesh, corner beads, angle beads, CE bonds to rough and smooth plaster complete the work as per drawing & specification.; Supply and install 2 coats of epoxy paint at walls including one prime coat and two coats and putty to give smooth Surface as a base for paint including fiberglass tape to joints and all other accessories as per manufacturers approved specification; Supply and install 300*300mm glazed ceramic wall tiles on cement mortar and including rough and smooth plaster, galvanized mesh, corner beads, angle beads, CE bonds; Acid Proof Tiles; Supply and install 600*600mm porcelain tiles with approved quality on 30 mm mortar including sand fill material as approved by the Client; Supply and install 12.5mm thk, gypsum board suspended ceiling including suspension system, paints as required specification and material as approved by the Client including frames supports, access openings and all other accessories to complete as shown in; 4.5 KG CO2 Type Fire Extinguishers; 6 KG ABC Type Fire Extinguishers; 15 mm dia.; 25 mm dia.; 32 mm dia.; 40 mm dia.; 80 mm dia.; 200 mm dia.; 250 mm dia.; 20 mm; 25 mm; 32 mm; 40 mm; 50 mm; 100 mm; 150 mm; 200 mm; 250 mm; Altitude control valve assembly, size 200 mm; Supply, install, connection, testing and commssionigs horizontal bladder type pressure tank with capacity 1500 liter according to manufacturer's detail and specification - PS-PT-1; Supply, install, connection, testing and commssionigs horizontal bladder type pressure tank with capacity 300 liter according to manufacturer's detail and specification - PS-PT-2; Chemical DosingTank (CDT) 6000 liters capacity polytheylene tank With pump assembly.; Actual capacity 1.5 Ton; Actual capacity 2.0 Ton; Air Flow 280 l/s @ 150 pa; Air Flow 3200 l/s @ 100 pa; Air Flow 110 l/s @ 50 pa; Air Flow 70 l/s @ 50 pa; Air Flow 35 l/s @ 35 pa; Air Flow 105 l/s @ 50 pa; Air Flow 180 l/s @ 0.01 pa; Galvanized sheet metal ducts; Supply Liner Slot diffuser 3 slots 1 inch; Return Liner Slot diffuser 3 slots 1 inch; Exhaust Grill 150mm x 150mm; Sand trap louver 2400mm x 1000mm; Sound attenuator size 1050 x 650 x 1000 m; Pump Set for FF Supply (FP01.FP02); Pump Set for Domestic Supply (BP01 / BP02); Pump Set for Irrigation Supply (IRR01 / IRR02); Pump Set for Drainage System; Pump Set for SW Force Main (1W+1S); acoustical tiles suspended ceiling 600x600mm concealed metal → 100 mm thickness lean concrete under the foundation; Foundation; Grade Beams; Slab on grade; Beams; Columns; Slabs; Lightweight Concrete Roof insulation as per Architect's specification; Hollow Concrete masonry unit, 150 mm thick wall for internal block; Insulated brickwork. with expanded polystyrene 200mm thick for External block; Hollow Concrete masonry unit, 300 mm thick wall for External block; 2 perpendicular layers of cold bitumen coats; 2 layer of 4mm HDPE membrane, 2 perpendicular layers cold bitumen coats; 1 layer EPOXY Paint 300 micron; Membrane fully bonded to prime deck and upstand; Geotextile Filter membrane uv resistance; 85mm thick thermal insulation; 1.5mm thick epdm waterproofing membrane; D1 - 1100 mm width x 2200 mm height; D4 - 1800 mm width x 3000 mm height; 1000 mm width x 2400 mm high (L1); Supply and install External plastering to walls and columns min. 15mm thick with cement mortar of specified grade including galvanized mesh, corner beads, angle beads, CE bonds to rough and smooth plaster complete the work as per drawing & specification.; Supply and install 2 coats of weatherproof paint at walls including one prime coat and two coats and putty to give smooth Surface as a base for paint including fiberglass tape to joints and all other accessories as per manufacturers approved specification; Supply and install internal plastering to walls and columns min. 15mm thick with cement mortar of specified grade including galvanized mesh, corner beads, angle beads, CE bonds to rough and smooth plaster complete the work as per drawing & specification.; Supply and install 2 coats of epoxy paint at walls including one prime coat and two coats and putty to give smooth Surface as a base for paint including fiberglass tape to joints and all other accessories as per manufacturers approved specification; Supply and install 300*300mm glazed ceramic wall tiles on cement mortar and including rough and smooth plaster, galvanized mesh, corner beads, angle beads, CE bonds; Acid Proof Tiles; Supply and install 600*600mm porcelain tiles with approved quality on 30 mm mortar including sand fill material as approved by the Client; Supply and install 12.5mm thk, gypsum board suspended ceiling including suspension system, paints as required specification and material as approved by the Client including frames supports, access openings and all other accessories to complete as shown in; 4.5 KG CO2 Type Fire Extinguishers; 6 KG ABC Type Fire Extinguishers; 15 mm dia.; 25 mm dia.; 32 mm dia.; 40 mm dia.; 80 mm dia.; 200 mm dia.; 250 mm dia.; 20 mm; 25 mm; 32 mm; 40 mm; 50 mm; 100 mm; 150 mm; 200 mm; 250 mm; Altitude control valve assembly, size 200 mm; Supply, install, connection, testing and commssionigs horizontal bladder type pressure tank with capacity 1500 liter according to manufacturer's detail and specification - PS-PT-1; Supply, install, connection, testing and commssionigs horizontal bladder type pressure tank with capacity 300 liter according to manufacturer's detail and specification - PS-PT-2; Chemical DosingTank (CDT) 6000 liters capacity polytheylene tank With pump assembly.; Actual capacity 1.5 Ton; Actual capacity 2.0 Ton; Air Flow 280 l/s @ 150 pa; Air Flow 3200 l/s @ 100 pa; Air Flow 110 l/s @ 50 pa; Air Flow 70 l/s @ 50 pa; Air Flow 35 l/s @ 35 pa; Air Flow 105 l/s @ 50 pa; Air Flow 180 l/s @ 0.01 pa; Galvanized sheet metal ducts; Supply Liner Slot diffuser 3 slots 1 inch; Return Liner Slot diffuser 3 slots 1 inch; Exhaust Grill 150mm x 150mm; Sand trap louver 2400mm x 1000mm; Sound attenuator size 1050 x 650 x 1000 m; Pump Set for FF Supply (FP01.FP02); Pump Set for Domestic Supply (BP01 / BP02); Pump Set for Irrigation Supply (IRR01 / IRR02); Pump Set for Drainage System; Pump Set for SW Force Main (1W+1S); acoustical tiles suspended ceiling 600x600mm concealed metal; physical units [51.03 h] |
| ENG-MT-TSE-CV-S-130 | Material Submittal for Works for Storage Tank (TSE) |  |  |  | resources none → physical units [59.54 h] |
| ENG-MT-TSE-CV-A-140 | Material Approval for Works for Storage Tank (TSE) |  |  |  | resources 100 mm thickness lean concrete under the foundation; Foundation; 2 perpendicular layers of cold bitumen coats; 2 layer of 4mm HDPE membrane, 2 perpendicular layers cold bitumen coats; 1 layer EPOXY Paint 300 micron; Membrane fully bonded to prime deck and upstand; Geotextile Filter membrane uv resistance; 85mm thick thermal insulation; 1.5mm thick epdm waterproofing membrane → 100 mm thickness lean concrete under the foundation; Foundation; 2 perpendicular layers of cold bitumen coats; 2 layer of 4mm HDPE membrane, 2 perpendicular layers cold bitumen coats; 1 layer EPOXY Paint 300 micron; Membrane fully bonded to prime deck and upstand; Geotextile Filter membrane uv resistance; 85mm thick thermal insulation; 1.5mm thick epdm waterproofing membrane; physical units [51.03 h] |
| ENG-MT-TSE-CV-S-140 | Material Submittal for Works for Control Room |  |  |  | resources none → physical units [25.52 h] |
| ENG-MT-TSE-CV-A-150 | Material Approval for Works for Control Room |  |  |  | resources 100 mm thickness lean concrete under the foundation; Foundation; Grade Beams; Beams; Columns; Slabs; Lightweight Concrete Roof insulation as per Architect's specification; Hollow Concrete masonry unit, 100 mm thick wall for internal block; Hollow Concrete masonry unit, 150 mm thick wall for internal block; Insulated brickwork. with expanded polystyrene 200mm thick for External block; Hollow Concrete masonry unit, 300 mm thick wall for External block; 2 perpendicular layers of cold bitumen coats; 2 layer of 4mm HDPE membrane, 2 perpendicular layers cold bitumen coats; 1 layer EPOXY Paint 300 micron; Membrane fully bonded to prime deck and upstand; Geotextile Filter membrane uv resistance; 85mm thick thermal insulation; 1.5mm thick epdm waterproofing membrane; D1 - 1100 mm width x 2200 mm height; D2 - 1070 mm width x 2225 mm height; D3 - 1200 mm width x 3000 mm height; D4 - 1800 mm width x 3000 mm height; Roller Shuter - 3000mm width x 4000mm height; D1' 1900mm width x 2950mm height; D2' 1200mm width x 2150mm height; D3' 800mm width x 2050mm height; D4' 1700mm width x 2050mm height; 1500 mm width x 1200 mm high (W01); 1200 mm width x 1200 mm high (W02); 1000 mm width x 2400 mm high (L1); Supply and install External plastering to walls and columns min. 15mm thick with cement mortar of specified grade including galvanized mesh, corner beads, angle beads, CE bonds to rough and smooth plaster complete the work as per drawing & specification.; Supply and install 2 coats of weatherproof paint at walls including one prime coat and two coats and putty to give smooth Surface as a base for paint including fiberglass tape to joints and all other accessories as per manufacturers approved specification; Supply and install internal plastering to walls and columns min. 15mm thick with cement mortar of specified grade including galvanized mesh, corner beads, angle beads, CE bonds to rough and smooth plaster complete the work as per drawing & specification.; Supply and install 2 coats of epoxy paint at walls including one prime coat and two coats and putty to give smooth Surface as a base for paint including fiberglass tape to joints and all other accessories as per manufacturers approved specification; Supply and install 300*300mm glazed ceramic wall tiles on cement mortar and including rough and smooth plaster, galvanized mesh, corner beads, angle beads, CE bonds; Acid Proof Tiles; Supply and install 600*600mm porcelain tiles with approved quality on 30 mm mortar including sand fill material as approved by the Client; Supply and install 12.5mm thk, gypsum board suspended ceiling including suspension system, paints as required specification and material as approved by the Client including frames supports, access openings and all other accessories to complete as shown in; 4.5 KG CO2 Type Fire Extinguishers; 6 KG ABC Type Fire Extinguishers; 15 mm dia.; 25 mm dia.; 32 mm dia.; 40 mm dia.; 80 mm dia.; 200 mm dia.; 250 mm dia.; Supply and installation of western water closet, flush tank type, heavy duty, one piece SASO certified, approval of client, dimesion not less than 40 cm width, 68 cm length including all other accessories as per drawings and specification; Supply and installation of urinal, heavy duty, one piece SASO certified, approval of client, including all other accessories as per drawings and specification; Supply and installation of Bib tap with Perenial Hose (BPH) with stainless steel flexible hose and cast brass chromeplated hand including all other accessories to complete as per drawing and specification.; Supply, installation, testing and commissioning of Lavatory / wash basin with counter for toilets, built in soap dispenser, mixer, single lever arm including all accessories as per drawings and specification and to the approval of the client; Provide and install paper towel dispenser, surface mounted, satin finish stainless steel as per approved sample including accessories.; Provide and install mirror as per approved sample including frames, backing and all accessories to complete.; Provide and install towel ring, surface mounted, satin finish stainless steel as per approved sample including accessories.; Hose Bib; Valve Chamber; Retarding Chamber; Inspection Chamber; Neutralization pit 1000x1000mm; 25mm diameter; 32mm diameter; 40mm diameter; 50mm diameter; 75mm diameter; 80mm diameter; 100mm diameter; 110mm diameter; 15mm diameter; 20mm diameter; 150mm diameter; 200mm diameter; 250mm diameter; 13mm diameter; Gully Trap; Floor drain 75mm; Floor cleanout 110mm; Roof drain; GRP water tanks capacity of each 1000 liter complete with all fittings, all valves and concrete pad; Water Heater 30ltr; Actual capacity 1.0 Ton; Actual capacity 1.5 Ton; Supply and install flexible duct with insulation; size 8 inch dia.; Supply and install flexible duct with insulation; size 10 inch dia.; Package Unit 57.4 kW "thermal"; Variable Air Volume (VAV 01); Variable Air Volume (VAV 02); Variable Air Volume (VAV 03); Variable Air Volume (VAV 04); Variable Air Volume (VAV 05); Variable Air Volume (VAV 06); Galvanized sheet metal ducts; Supply Liner Slot diffuser 3 slots 1 inch; Return Liner Slot diffuser 3 slots 1 inch; Exhaust Grill 150mm x 150mm; Exhast Air fan 515 l/s @ 150 pa; Exhast Air fan 3200 l/s @ 100 pa; Sand trap louver 2400mm x 1000mm; Sound attenuator size 1050 x 650 x 1000 m; Fire suppression system FM200 57 kg fill capacity consists of 2 cylinders, duty + standby, complete with all required mechanical, electrical , and control items to install, test, and operate the system.; Fire suppression system NOVEC 1230 134.1 kg fill capacity consists of 2 cylinders, duty + standby, complete with all required mechanical, electrical , and control items to install, test, and operate the system.; Fire suppression system NOVEC 1230 29.2 kg fill capacity consists of 2 cylinders, duty + standby, complete with all required mechanical, electrical , and control items to install, test, and operate the system.; Fire suppression system NOVEC 1230 53.5 kg fill capacity consists of 2 cylinders, duty + standby, complete with all required mechanical, electrical , and control items to install, test, and operate the system.; Fire suppression system NOVEC 1230 82.3 kg fill capacity consists of 2 cylinders, duty + standby, complete with all required mechanical, electrical , and control items to install, test, and operate the system.; Fire suppression system NOVEC 1230 42.5 kg fill capacity consists of 2 cylinders, duty + standby, complete with all required mechanical, electrical , and control items to install, test, and operate the system.; Supply and install steel ladder with cage at pump room for as per drawings and specification.; Overhead Travelling Crane; lifting capacity 1.50 ton manual type all to manufacturer's detail and specifications. - PS-OC-1; Hot dipped Galvanized steel Trench Grating; Hot dipped Galvanized steel Channel Cover Plate; Steel Frame and Cover 1200 x 1200; Vent Cowl (Standard Size); Steel Handrail of 1.2m height; 30W LED linear Pendant lighting; 30W LED Emergency linear Pendant lighting; 47W LED linear Pendant lighting; 47W LED Emergency linear Pendant lighting; 13W recess mounted LED down light fitting; 13W recess emergency mounted LED down light fitting with 1.5 Hr Battery; 10.4W LED Exit light with 1.5 Hr Battery; Distribution board (MDB-PR-01); Distribution board (LPDB-PR-01); Distribution board (MDB-CB-01); Distribution board (LPDB-CR-01); 13A,1? 230V Twin socket outlet with switch; 13A,1? 230V Industrial socket outlet with switch; 13A, Twin Socket outlet, Weather Proof; 400A, 3P Disconnect switch; 30A, 2P AC Disconnect Switch; 30A, 3P AC Disconnect Switch; 60A, 3P AC Disconnect Switch; 20A Duplex Receptacle Floor Mounted; Single gang Lighting switch; Double gang Lighting switch; 2way Single gang Lighting switch; Cable Tray 300 mm X 100 mm; 4CX6 Cu. XLPE FRLSZH Cable; 4CX10 Cu. XLPE FRLSZH Cable; 4CX16 Cu. XLPE FRLSZH Cable; 4CX25 Cu. XLPE FRLSZH Cable; 4CX35 Cu. XLPE FRLSZH Cable; 4CX185 Cu. XLPE FRLSZH Cable; 120mm2 Tinned copper wire; Grounding rod 20mmX3m; Grounding rod with Pit 20mmX3m; Earthing Bar; Cu earth strip 25X4 mm; 1.5m Air terminal; 4mm2 Cu./FRLSZH Cable; 6mm2 Cu./FRLSZH Cable; 10mm2 Cu./FRLSZH Cable; 16mm2 Cu./FRLSZH Cable; 95mm2 Cu./FRLSZH Cable; 120mm2 Cu./FRLSZH Cable; 30KVA, 400V, 3PH, 60Hz UPS; CB-UPS-01 panel; Supply, install and connection of a SCADA server cum workstation complete with network rack, network switch, sensors, printer, armoured cables with cable tray & conduits, level transmitter, liquid flow meter, quality sensor (COD,BOD,pH), pressure transmit; Fire Alarm Control panel with fire alarm zoning with Mimic panel with fire alarm zoning; Supply, install to site and installation of the Aspirating Smoke Detector complete with accessories and pipes; Supply, install to site and installation of the addressable manual call point with operation safety glass breaking and pushbutton; Supply, install to site and installation of the photoelectric smoke detector with base; Supply, install to site and installation of the heat detector with base; Supply, install to site and installation of multi criteria sensors with base; Supply, install to site and installation of Hydrogen detector; Supply, install to site and installation of Duct detector; Sounder With Beacon; Remote LED Indicator; Single Channel Interface Module; Addressable Control module for Sounders; Addressable relay module for interface; Addressable monitor module for interface; Supply, install to site and installation Fire loop cable; Supply, install to site and installation of power cable; Fire Fighter’s Telephone Centre; Fireman’s Telephone Jack; Voice Command Center; DACT (Auto - Dailer) for 24x7 Civil Defence; Transmission Communication cable - Fiber Optics; Transmission Communication cable - Ethernet Cable; Supply, install to site and installation of power supply system for fire alarm control panel; acoustical tiles suspended ceiling 600x600mm concealed metal → 100 mm thickness lean concrete under the foundation; Foundation; Grade Beams; Beams; Columns; Slabs; Lightweight Concrete Roof insulation as per Architect's specification; Hollow Concrete masonry unit, 100 mm thick wall for internal block; Hollow Concrete masonry unit, 150 mm thick wall for internal block; Insulated brickwork. with expanded polystyrene 200mm thick for External block; Hollow Concrete masonry unit, 300 mm thick wall for External block; 2 perpendicular layers of cold bitumen coats; 2 layer of 4mm HDPE membrane, 2 perpendicular layers cold bitumen coats; 1 layer EPOXY Paint 300 micron; Membrane fully bonded to prime deck and upstand; Geotextile Filter membrane uv resistance; 85mm thick thermal insulation; 1.5mm thick epdm waterproofing membrane; D1 - 1100 mm width x 2200 mm height; D2 - 1070 mm width x 2225 mm height; D3 - 1200 mm width x 3000 mm height; D4 - 1800 mm width x 3000 mm height; Roller Shuter - 3000mm width x 4000mm height; D1' 1900mm width x 2950mm height; D2' 1200mm width x 2150mm height; D3' 800mm width x 2050mm height; D4' 1700mm width x 2050mm height; 1500 mm width x 1200 mm high (W01); 1200 mm width x 1200 mm high (W02); 1000 mm width x 2400 mm high (L1); Supply and install External plastering to walls and columns min. 15mm thick with cement mortar of specified grade including galvanized mesh, corner beads, angle beads, CE bonds to rough and smooth plaster complete the work as per drawing & specification.; Supply and install 2 coats of weatherproof paint at walls including one prime coat and two coats and putty to give smooth Surface as a base for paint including fiberglass tape to joints and all other accessories as per manufacturers approved specification; Supply and install internal plastering to walls and columns min. 15mm thick with cement mortar of specified grade including galvanized mesh, corner beads, angle beads, CE bonds to rough and smooth plaster complete the work as per drawing & specification.; Supply and install 2 coats of epoxy paint at walls including one prime coat and two coats and putty to give smooth Surface as a base for paint including fiberglass tape to joints and all other accessories as per manufacturers approved specification; Supply and install 300*300mm glazed ceramic wall tiles on cement mortar and including rough and smooth plaster, galvanized mesh, corner beads, angle beads, CE bonds; Acid Proof Tiles; Supply and install 600*600mm porcelain tiles with approved quality on 30 mm mortar including sand fill material as approved by the Client; Supply and install 12.5mm thk, gypsum board suspended ceiling including suspension system, paints as required specification and material as approved by the Client including frames supports, access openings and all other accessories to complete as shown in; 4.5 KG CO2 Type Fire Extinguishers; 6 KG ABC Type Fire Extinguishers; 15 mm dia.; 25 mm dia.; 32 mm dia.; 40 mm dia.; 80 mm dia.; 200 mm dia.; 250 mm dia.; Supply and installation of western water closet, flush tank type, heavy duty, one piece SASO certified, approval of client, dimesion not less than 40 cm width, 68 cm length including all other accessories as per drawings and specification; Supply and installation of urinal, heavy duty, one piece SASO certified, approval of client, including all other accessories as per drawings and specification; Supply and installation of Bib tap with Perenial Hose (BPH) with stainless steel flexible hose and cast brass chromeplated hand including all other accessories to complete as per drawing and specification.; Supply, installation, testing and commissioning of Lavatory / wash basin with counter for toilets, built in soap dispenser, mixer, single lever arm including all accessories as per drawings and specification and to the approval of the client; Provide and install paper towel dispenser, surface mounted, satin finish stainless steel as per approved sample including accessories.; Provide and install mirror as per approved sample including frames, backing and all accessories to complete.; Provide and install towel ring, surface mounted, satin finish stainless steel as per approved sample including accessories.; Hose Bib; Valve Chamber; Retarding Chamber; Inspection Chamber; Neutralization pit 1000x1000mm; 25mm diameter; 32mm diameter; 40mm diameter; 50mm diameter; 75mm diameter; 80mm diameter; 100mm diameter; 110mm diameter; 15mm diameter; 20mm diameter; 150mm diameter; 200mm diameter; 250mm diameter; 13mm diameter; Gully Trap; Floor drain 75mm; Floor cleanout 110mm; Roof drain; GRP water tanks capacity of each 1000 liter complete with all fittings, all valves and concrete pad; Water Heater 30ltr; Actual capacity 1.0 Ton; Actual capacity 1.5 Ton; Supply and install flexible duct with insulation; size 8 inch dia.; Supply and install flexible duct with insulation; size 10 inch dia.; Package Unit 57.4 kW "thermal"; Variable Air Volume (VAV 01); Variable Air Volume (VAV 02); Variable Air Volume (VAV 03); Variable Air Volume (VAV 04); Variable Air Volume (VAV 05); Variable Air Volume (VAV 06); Galvanized sheet metal ducts; Supply Liner Slot diffuser 3 slots 1 inch; Return Liner Slot diffuser 3 slots 1 inch; Exhaust Grill 150mm x 150mm; Exhast Air fan 515 l/s @ 150 pa; Exhast Air fan 3200 l/s @ 100 pa; Sand trap louver 2400mm x 1000mm; Sound attenuator size 1050 x 650 x 1000 m; Fire suppression system FM200 57 kg fill capacity consists of 2 cylinders, duty + standby, complete with all required mechanical, electrical , and control items to install, test, and operate the system.; Fire suppression system NOVEC 1230 134.1 kg fill capacity consists of 2 cylinders, duty + standby, complete with all required mechanical, electrical , and control items to install, test, and operate the system.; Fire suppression system NOVEC 1230 29.2 kg fill capacity consists of 2 cylinders, duty + standby, complete with all required mechanical, electrical , and control items to install, test, and operate the system.; Fire suppression system NOVEC 1230 53.5 kg fill capacity consists of 2 cylinders, duty + standby, complete with all required mechanical, electrical , and control items to install, test, and operate the system.; Fire suppression system NOVEC 1230 82.3 kg fill capacity consists of 2 cylinders, duty + standby, complete with all required mechanical, electrical , and control items to install, test, and operate the system.; Fire suppression system NOVEC 1230 42.5 kg fill capacity consists of 2 cylinders, duty + standby, complete with all required mechanical, electrical , and control items to install, test, and operate the system.; Supply and install steel ladder with cage at pump room for as per drawings and specification.; Overhead Travelling Crane; lifting capacity 1.50 ton manual type all to manufacturer's detail and specifications. - PS-OC-1; Hot dipped Galvanized steel Trench Grating; Hot dipped Galvanized steel Channel Cover Plate; Steel Frame and Cover 1200 x 1200; Vent Cowl (Standard Size); Steel Handrail of 1.2m height; 30W LED linear Pendant lighting; 30W LED Emergency linear Pendant lighting; 47W LED linear Pendant lighting; 47W LED Emergency linear Pendant lighting; 13W recess mounted LED down light fitting; 13W recess emergency mounted LED down light fitting with 1.5 Hr Battery; 10.4W LED Exit light with 1.5 Hr Battery; Distribution board (MDB-PR-01); Distribution board (LPDB-PR-01); Distribution board (MDB-CB-01); Distribution board (LPDB-CR-01); 13A,1? 230V Twin socket outlet with switch; 13A,1? 230V Industrial socket outlet with switch; 13A, Twin Socket outlet, Weather Proof; 400A, 3P Disconnect switch; 30A, 2P AC Disconnect Switch; 30A, 3P AC Disconnect Switch; 60A, 3P AC Disconnect Switch; 20A Duplex Receptacle Floor Mounted; Single gang Lighting switch; Double gang Lighting switch; 2way Single gang Lighting switch; Cable Tray 300 mm X 100 mm; 4CX6 Cu. XLPE FRLSZH Cable; 4CX10 Cu. XLPE FRLSZH Cable; 4CX16 Cu. XLPE FRLSZH Cable; 4CX25 Cu. XLPE FRLSZH Cable; 4CX35 Cu. XLPE FRLSZH Cable; 4CX185 Cu. XLPE FRLSZH Cable; 120mm2 Tinned copper wire; Grounding rod 20mmX3m; Grounding rod with Pit 20mmX3m; Earthing Bar; Cu earth strip 25X4 mm; 1.5m Air terminal; 4mm2 Cu./FRLSZH Cable; 6mm2 Cu./FRLSZH Cable; 10mm2 Cu./FRLSZH Cable; 16mm2 Cu./FRLSZH Cable; 95mm2 Cu./FRLSZH Cable; 120mm2 Cu./FRLSZH Cable; 30KVA, 400V, 3PH, 60Hz UPS; CB-UPS-01 panel; Supply, install and connection of a SCADA server cum workstation complete with network rack, network switch, sensors, printer, armoured cables with cable tray & conduits, level transmitter, liquid flow meter, quality sensor (COD,BOD,pH), pressure transmit; Fire Alarm Control panel with fire alarm zoning with Mimic panel with fire alarm zoning; Supply, install to site and installation of the Aspirating Smoke Detector complete with accessories and pipes; Supply, install to site and installation of the addressable manual call point with operation safety glass breaking and pushbutton; Supply, install to site and installation of the photoelectric smoke detector with base; Supply, install to site and installation of the heat detector with base; Supply, install to site and installation of multi criteria sensors with base; Supply, install to site and installation of Hydrogen detector; Supply, install to site and installation of Duct detector; Sounder With Beacon; Remote LED Indicator; Single Channel Interface Module; Addressable Control module for Sounders; Addressable relay module for interface; Addressable monitor module for interface; Supply, install to site and installation Fire loop cable; Supply, install to site and installation of power cable; Fire Fighter’s Telephone Centre; Fireman’s Telephone Jack; Voice Command Center; DACT (Auto - Dailer) for 24x7 Civil Defence; Transmission Communication cable - Fiber Optics; Transmission Communication cable - Ethernet Cable; Supply, install to site and installation of power supply system for fire alarm control panel; acoustical tiles suspended ceiling 600x600mm concealed metal; physical units [51.03 h] |
| ENG-MT-PS-CV-S-140 | Material Submittal for Works of Sewage Pump Station |  |  |  | resources none → physical units [59.54 h] |
| ENG-MT-PS-CV-A-150 | Material Approval for Works of Sewage Pump Station |  |  |  | resources 100 mm thickness lean concrete under the foundation; Foundation; Walls; Beams; Slabs; Lightweight Concrete Roof insulation as per Architect's specification; 2 perpendicular layers of cold bitumen coats; 2 layer of 4mm HDPE membrane, 2 perpendicular layers cold bitumen coats; 1 layer EPOXY Paint 300 micron; Membrane fully bonded to prime deck and upstand; Geotextile Filter membrane uv resistance; 85mm thick thermal insulation; 1.5mm thick epdm waterproofing membrane; Supply and install External plastering to walls and columns min. 15mm thick with cement mortar of specified grade including galvanized mesh, corner beads, angle beads, CE bonds to rough and smooth plaster complete the work as per drawing & specification.; Supply and install 2 coats of weatherproof paint at walls including one prime coat and two coats and putty to give smooth Surface as a base for paint including fiberglass tape to joints and all other accessories as per manufacturers approved specification; Supply and install internal plastering to walls and columns min. 15mm thick with cement mortar of specified grade including galvanized mesh, corner beads, angle beads, CE bonds to rough and smooth plaster complete the work as per drawing & specification.; Supply and install 300*300mm glazed ceramic wall tiles on cement mortar and including rough and smooth plaster, galvanized mesh, corner beads, angle beads, CE bonds → 100 mm thickness lean concrete under the foundation; Foundation; Walls; Beams; Slabs; Lightweight Concrete Roof insulation as per Architect's specification; 2 perpendicular layers of cold bitumen coats; 2 layer of 4mm HDPE membrane, 2 perpendicular layers cold bitumen coats; 1 layer EPOXY Paint 300 micron; Membrane fully bonded to prime deck and upstand; Geotextile Filter membrane uv resistance; 85mm thick thermal insulation; 1.5mm thick epdm waterproofing membrane; Supply and install External plastering to walls and columns min. 15mm thick with cement mortar of specified grade including galvanized mesh, corner beads, angle beads, CE bonds to rough and smooth plaster complete the work as per drawing & specification.; Supply and install 2 coats of weatherproof paint at walls including one prime coat and two coats and putty to give smooth Surface as a base for paint including fiberglass tape to joints and all other accessories as per manufacturers approved specification; Supply and install internal plastering to walls and columns min. 15mm thick with cement mortar of specified grade including galvanized mesh, corner beads, angle beads, CE bonds to rough and smooth plaster complete the work as per drawing & specification.; Supply and install 300*300mm glazed ceramic wall tiles on cement mortar and including rough and smooth plaster, galvanized mesh, corner beads, angle beads, CE bonds; physical units [42.53 h] |
| ENG-MT-GR-CV-A-130 | Material Approval for Materials for Gaurd Room |  |  |  | resources 100 mm thickness lean concrete under the foundation; Foundation; Slab on Grade; Beams; Columns; Slabs; Lightweight Concrete Roof insulation as per Architect's specification; Insulated brickwork. with expanded polystyrene 200mm thick; vertical straight wall complete with accessories .; Common brickwork. 150mm thick; vertical straight wall complete with accessories.; Two Layers of Bituminous Coating; CW01 - 1000 mm width x 2000 mm height; CW02 - 2000 mm width x 2000 mm height; D2 - 900 mm x 2200 mm height temper door; Supply and install 50mm thick random cut stone cladding complete with 600mm x 50mm thick coping, necessary framings, slotted anchor connection, steel tube framing, aluminum angles all necessary fittings & accessories as per manufacturer's detail & archite; Supply and install 300*300mm terrazzo tiles with 150mm high skirting at perimeter with approved quality on 30 mm mortar including sand fill material as approved by the Client (For Roof); Supply and install 300*300mm glazed ceramic wall tiles on cement mortar and including rough and smooth plaster, galvanized mesh, corner beads, angle beads, CE bonds (For Toilets); Supply and install internal plastering and 2 coats of acrylic paint at walls including one coat of primer & two coats of putty to give smooth finish; Supply and install 600*600mm porcelain tiles with approved quality on 30 mm mortar including sand fill material as approved by the Client (for Security Area); Supply and install 12.5mm thk, gypsum board suspended ceiling including suspension system, paints as required specification and material as approved by the Client including frames supports, access openings and all other accessories to complete as shown in; Guard room coping 350mm; Guard room coping 450mm; Stone coping 500mm; Stone coping 525mm; Office Chairs; Office Tables; Guard Stand; Supply and install Hand Wash Basin with Water Tap, angle valve, P-trap connected to 50mm diameter sanitary pipe fittings chased to wall.; Supply and install paper towel dispenser, surface mounted, satin finish stainless steel as per approved sample including accessories.; Supply and install mirror, size 460*910mm as per approved sample including frames, backing and all accessories to complete.; Supply and install towel ring , surface mounted, satin finish stainless steel as per approved sample including accessories.; Kitchen sink with single bowl with hot/cold water mixer.; Supply and install Base mounted flush tank water Western water closet system with lid connected to 110mm soil pipe and sanitary tee complete with jointing, angles and bent below floor slab to drainage system; Gate Valves; Slow Closing Valve; 1 meter length 10mm diameter Flexible Hose with insulated handle complete with fork support, index push, vacuum breaker; 50mm diameter; 75mm diameter; 80mm diameter; 100mm diameter; 110mm diameter; 13mm diameter; 15mm diameter; 20mm diameter; 25mm diameter; 32mm diameter; Isolation Valve Size 20; Isolation Valve Size 25; Isolation Valve Size 32; Isolation Valve Size 50; 20 mm diameter spray head for cold water supply; Supply and install Electric Water Heater set with connection; Water meter complete with accessories.; Roof drain; Vent on a roof to exhaust air; 300 X 300 mm Gully trap; inspection chamber, size 800x900x1000; 900mm x 800mm Pressure break chamber; Floor cleanout, size 75 mm diameter; Floor cleanout, size 110 mm diameter; GRP water tanks capacity of each 1000 liter complete with all fittings, all valves and concrete pad; Mini split actual capacity 2 Ton; Supply, fabricate, install and testing factory fabricated metal ducts with flanges complete with supports, vanes, dampers, links, levers and quadrants etc. as per specifications. It shall include all materials of the duct and supporting arrangement comple; Supplying, installation testing & commissioning of external insulation on ducts; Supply, fix, testing and commissioning of exhaust air/fresh air louvers of powder coated extruded aluminium construction.; Providing, fixing, testing and commissioning of powder coated extruded aluminum sections grills and diffusers with dampers.; Supply, Installation & Testing of 2 hours Fire rated system for closing the openings between rooms with help of Rock wool, G.I Sheet and Hilti or equivalent Sealants( Qty measured will be the size of opening). Item Properties shall be quoted as per techni; 4.5 KG CO2 Type Fire Extinguishers; 6 KG ABC Type Fire Extinguishers; Junction Box for lighting fixture; Trench excavation to receive 2 nos 50mm diameter PVC Conduit, sand bedding and embedded with sand encasement and backfilling with excavated material complete with warning tape at approved depth; Supply, Install, fixings, testing and commissioning 80W LED Projector waterproof DJ effect light including customized project image features complete with mounting system specification to Engineer's approval.; Earth Pit; Grounding rod 20mmX3m; Grounding rod with Pit 20mmX3m; Earthing Bar; 120mm2 Tinned copper wire; Guard Room 1; Guard Room 2; Guard Room 3; 30A, 2P AC Disconnect Switch; 20A Duplex Receptacle Floor Mounted; Twin Socket outlet; Twin Socket outlet, Weather Proof; Single gang Lighting switch; 36W LED linear Pendant lighting; 36W LED Emergency linear Pendant lighting; 13W recess mounted LED down light fitting; 13W recess emergency mounted LED down light fitting with 1.5 Hr Battery; 10.4W LED Exit light with 1.5 Hr Battery; 4mm2 Cu./FRLSZH Cable; 6mm2 Cu./FRLSZH Cable; Fire Alarm Control panel with fire alarm zoning with Mimic panel with fire alarm zoning; Main Fire Alarm Control panel with fire alarm zoning with Mimic panel with fire alarm zoning; Supply and installation of the addressable manual call point with operation safety glass breaking and pushbutton; Supply and installation of the photoelectric heat & smoke detector with base; Sounder With Beacon; Addressable Control module for Sounders; Addressable Control module for HVAC System; Addressable Monitor module for HVAC System; 2C x 1.5 Sqm FR Rated Armored - Cable For Loop Wiring; DACT (Auto - Dailer) for 24x7 Civil Defence; Transmission Communication cable - Fiber Optics 12Core; Transmission Communication cable - Ethernet Cable; Supply, install to site and installation of power supply system for fire alarm control panel; Supply, install to site and installation of power cable; Fire Fighter’s Telephone Centre; Fireman’s Telephone Jack; Voice Command Center → 100 mm thickness lean concrete under the foundation; Foundation; Slab on Grade; Beams; Columns; Slabs; Lightweight Concrete Roof insulation as per Architect's specification; Insulated brickwork. with expanded polystyrene 200mm thick; vertical straight wall complete with accessories .; Common brickwork. 150mm thick; vertical straight wall complete with accessories.; Two Layers of Bituminous Coating; CW01 - 1000 mm width x 2000 mm height; CW02 - 2000 mm width x 2000 mm height; D2 - 900 mm x 2200 mm height temper door; Supply and install 50mm thick random cut stone cladding complete with 600mm x 50mm thick coping, necessary framings, slotted anchor connection, steel tube framing, aluminum angles all necessary fittings & accessories as per manufacturer's detail & archite; Supply and install 300*300mm terrazzo tiles with 150mm high skirting at perimeter with approved quality on 30 mm mortar including sand fill material as approved by the Client (For Roof); Supply and install 300*300mm glazed ceramic wall tiles on cement mortar and including rough and smooth plaster, galvanized mesh, corner beads, angle beads, CE bonds (For Toilets); Supply and install internal plastering and 2 coats of acrylic paint at walls including one coat of primer & two coats of putty to give smooth finish; Supply and install 600*600mm porcelain tiles with approved quality on 30 mm mortar including sand fill material as approved by the Client (for Security Area); Supply and install 12.5mm thk, gypsum board suspended ceiling including suspension system, paints as required specification and material as approved by the Client including frames supports, access openings and all other accessories to complete as shown in; Guard room coping 350mm; Guard room coping 450mm; Stone coping 500mm; Stone coping 525mm; Office Chairs; Office Tables; Guard Stand; Supply and install Hand Wash Basin with Water Tap, angle valve, P-trap connected to 50mm diameter sanitary pipe fittings chased to wall.; Supply and install paper towel dispenser, surface mounted, satin finish stainless steel as per approved sample including accessories.; Supply and install mirror, size 460*910mm as per approved sample including frames, backing and all accessories to complete.; Supply and install towel ring , surface mounted, satin finish stainless steel as per approved sample including accessories.; Kitchen sink with single bowl with hot/cold water mixer.; Supply and install Base mounted flush tank water Western water closet system with lid connected to 110mm soil pipe and sanitary tee complete with jointing, angles and bent below floor slab to drainage system; Gate Valves; Slow Closing Valve; 1 meter length 10mm diameter Flexible Hose with insulated handle complete with fork support, index push, vacuum breaker; 50mm diameter; 75mm diameter; 80mm diameter; 100mm diameter; 110mm diameter; 13mm diameter; 15mm diameter; 20mm diameter; 25mm diameter; 32mm diameter; Isolation Valve Size 20; Isolation Valve Size 25; Isolation Valve Size 32; Isolation Valve Size 50; 20 mm diameter spray head for cold water supply; Supply and install Electric Water Heater set with connection; Water meter complete with accessories.; Roof drain; Vent on a roof to exhaust air; 300 X 300 mm Gully trap; inspection chamber, size 800x900x1000; 900mm x 800mm Pressure break chamber; Floor cleanout, size 75 mm diameter; Floor cleanout, size 110 mm diameter; GRP water tanks capacity of each 1000 liter complete with all fittings, all valves and concrete pad; Mini split actual capacity 2 Ton; Supply, fabricate, install and testing factory fabricated metal ducts with flanges complete with supports, vanes, dampers, links, levers and quadrants etc. as per specifications. It shall include all materials of the duct and supporting arrangement comple; Supplying, installation testing & commissioning of external insulation on ducts; Supply, fix, testing and commissioning of exhaust air/fresh air louvers of powder coated extruded aluminium construction.; Providing, fixing, testing and commissioning of powder coated extruded aluminum sections grills and diffusers with dampers.; Supply, Installation & Testing of 2 hours Fire rated system for closing the openings between rooms with help of Rock wool, G.I Sheet and Hilti or equivalent Sealants( Qty measured will be the size of opening). Item Properties shall be quoted as per techni; 4.5 KG CO2 Type Fire Extinguishers; 6 KG ABC Type Fire Extinguishers; Junction Box for lighting fixture; Trench excavation to receive 2 nos 50mm diameter PVC Conduit, sand bedding and embedded with sand encasement and backfilling with excavated material complete with warning tape at approved depth; Supply, Install, fixings, testing and commissioning 80W LED Projector waterproof DJ effect light including customized project image features complete with mounting system specification to Engineer's approval.; Earth Pit; Grounding rod 20mmX3m; Grounding rod with Pit 20mmX3m; Earthing Bar; 120mm2 Tinned copper wire; Guard Room 1; Guard Room 2; Guard Room 3; 30A, 2P AC Disconnect Switch; 20A Duplex Receptacle Floor Mounted; Twin Socket outlet; Twin Socket outlet, Weather Proof; Single gang Lighting switch; 36W LED linear Pendant lighting; 36W LED Emergency linear Pendant lighting; 13W recess mounted LED down light fitting; 13W recess emergency mounted LED down light fitting with 1.5 Hr Battery; 10.4W LED Exit light with 1.5 Hr Battery; 4mm2 Cu./FRLSZH Cable; 6mm2 Cu./FRLSZH Cable; Fire Alarm Control panel with fire alarm zoning with Mimic panel with fire alarm zoning; Main Fire Alarm Control panel with fire alarm zoning with Mimic panel with fire alarm zoning; Supply and installation of the addressable manual call point with operation safety glass breaking and pushbutton; Supply and installation of the photoelectric heat & smoke detector with base; Sounder With Beacon; Addressable Control module for Sounders; Addressable Control module for HVAC System; Addressable Monitor module for HVAC System; 2C x 1.5 Sqm FR Rated Armored - Cable For Loop Wiring; DACT (Auto - Dailer) for 24x7 Civil Defence; Transmission Communication cable - Fiber Optics 12Core; Transmission Communication cable - Ethernet Cable; Supply, install to site and installation of power supply system for fire alarm control panel; Supply, install to site and installation of power cable; Fire Fighter’s Telephone Centre; Fireman’s Telephone Jack; Voice Command Center; physical units [59.54 h] |
| ENG-MT-FE-CV-A-120 | Material Approval for Materials for Boundary Fence |  |  |  | resources 100 mm thickness lean concrete under the foundation; Foundation; Walls; Beams; Columns; Common brickwork. 300mm thick; vertical straight wall complete with accessories.; Two Layers of Bituminous Coating; 20x20 Approved Polysulfide Joint Sealant; 2 perpendicular layers of cold bitumen coats; 2 layer of 4mm HDPE membrane, 2 perpendicular layers cold bitumen coats; 1 layer EPOXY Paint 300 micron; Membrane fully bonded to prime deck and upstand; Geotextile Filter membrane uv resistance; 85mm thick thermal insulation; 1.5mm thick epdm waterproofing membrane; Supply and install 33mm thick Lexan cladding blue complete with necessary framings & accessories all as per manufacturer's & architectural drawing.; Supply and install 50mm thick random cut stone cladding complete with 600mm x 50mm thick coping, necessary framings, slotted anchor connection, steel tube framing, aluminum angles all necessary fittings & accessories as per manufacturer's detail & archite; Supply and install External plastering to walls and columns min. 15mm thick with cement mortar of specified grade including galvanized mesh, corner beads, angle beads, CE bonds to rough and smooth plaster complete the work as per drawing & specification.; Supply and install 2 coats of weatherproof paint at walls including one prime coat and two coats and putty to give smooth Surface as a base for paint including fiberglass tape to joints and all other accessories as per manufacturers approved specification; Supply and install MODON Signage with Logo Type 1; Supply and install MODON Signage Type 2; Supply and install "Triangle Style" signage; Magnetic Control Access barrier, Automatic Vehicular Barriers to be installed on ground with magnetic access; Trench excavation to receive 2 nos 50mm diameter PVC Conduit, sand bedding and embedded with sand encasement and backfilling with excavated material complete with warning tape at approved depth; IR Intrusion Detection System Quad Beams (Tx & Rx) (SL-350 QDM); Control cable; CAT6A cable; Field Equipment Cabinet enclosed outdoor complete with precast concrete footing, suitable for parameter security and weather proof to the local enviroment. Not less than IP66 and IK rating.; Supply and install 800mm x 800mm x 800mm height concrete handhole with bituminous paint all around, 690mm x 690mm handhold cover and sump cover.; including pit excavation; 800mm depth minimum Trench excavation to receive 3 nos 50mm diameter PVC Conduit with spacer, sand bedding and embedded with sand encasement and backfill with excavated material well compacted complete with warning tape; Hot dipped galvanized cable conduits for CAT6A cable and Control Cables embedded to wall; 8 Port Industrial PoE Switch 10/100BaseT (0 deg to +70 deg. Celsius); 06C Optical Fiber SM; 48C Optical Fiber SM; 48 Core Splice Closure; Boom Barrier at Security Guard Room; Pedestrian turnstile at Security Guard Room; Access Control Unit; Access Card Reader; Magnetic Lock; Break Glass; Exit Push button; Door Sensor; Biometrics Reader; Pole/Bollard mounted IP( PoE), Automatic Number Plate Recognition (ANPR, camera, 5MP,IP 66, IR illumination, 3-8mm varifocal, auto iris lens type price include the Bollard/pole); 12U rack dimension (W x H x L) 600 x 625 x 600 mm; 4C-16mm2 CU/XLPE/PVC direct buried armored cable; 4C-10mm2 CU/XLPE/PVC direct buried armored cable; 16mm2 CU/PVC wire; 10mm2 CU/PVC wire; 400V, 3PH, 60Hz lighting control panel (LCP-02); 38W, 230V, 1PH, 60Hz fence, led linear uplight lighting, IP66 → 100 mm thickness lean concrete under the foundation; Foundation; Walls; Beams; Columns; Common brickwork. 300mm thick; vertical straight wall complete with accessories.; Two Layers of Bituminous Coating; 20x20 Approved Polysulfide Joint Sealant; 2 perpendicular layers of cold bitumen coats; 2 layer of 4mm HDPE membrane, 2 perpendicular layers cold bitumen coats; 1 layer EPOXY Paint 300 micron; Membrane fully bonded to prime deck and upstand; Geotextile Filter membrane uv resistance; 85mm thick thermal insulation; 1.5mm thick epdm waterproofing membrane; Supply and install 33mm thick Lexan cladding blue complete with necessary framings & accessories all as per manufacturer's & architectural drawing.; Supply and install 50mm thick random cut stone cladding complete with 600mm x 50mm thick coping, necessary framings, slotted anchor connection, steel tube framing, aluminum angles all necessary fittings & accessories as per manufacturer's detail & archite; Supply and install External plastering to walls and columns min. 15mm thick with cement mortar of specified grade including galvanized mesh, corner beads, angle beads, CE bonds to rough and smooth plaster complete the work as per drawing & specification.; Supply and install 2 coats of weatherproof paint at walls including one prime coat and two coats and putty to give smooth Surface as a base for paint including fiberglass tape to joints and all other accessories as per manufacturers approved specification; Supply and install MODON Signage with Logo Type 1; Supply and install MODON Signage Type 2; Supply and install "Triangle Style" signage; Magnetic Control Access barrier, Automatic Vehicular Barriers to be installed on ground with magnetic access; Trench excavation to receive 2 nos 50mm diameter PVC Conduit, sand bedding and embedded with sand encasement and backfilling with excavated material complete with warning tape at approved depth; IR Intrusion Detection System Quad Beams (Tx & Rx) (SL-350 QDM); Control cable; CAT6A cable; Field Equipment Cabinet enclosed outdoor complete with precast concrete footing, suitable for parameter security and weather proof to the local enviroment. Not less than IP66 and IK rating.; Supply and install 800mm x 800mm x 800mm height concrete handhole with bituminous paint all around, 690mm x 690mm handhold cover and sump cover.; including pit excavation; 800mm depth minimum Trench excavation to receive 3 nos 50mm diameter PVC Conduit with spacer, sand bedding and embedded with sand encasement and backfill with excavated material well compacted complete with warning tape; Hot dipped galvanized cable conduits for CAT6A cable and Control Cables embedded to wall; 8 Port Industrial PoE Switch 10/100BaseT (0 deg to +70 deg. Celsius); 06C Optical Fiber SM; 48C Optical Fiber SM; 48 Core Splice Closure; Boom Barrier at Security Guard Room; Pedestrian turnstile at Security Guard Room; Access Control Unit; Access Card Reader; Magnetic Lock; Break Glass; Exit Push button; Door Sensor; Biometrics Reader; Pole/Bollard mounted IP( PoE), Automatic Number Plate Recognition (ANPR, camera, 5MP,IP 66, IR illumination, 3-8mm varifocal, auto iris lens type price include the Bollard/pole); 12U rack dimension (W x H x L) 600 x 625 x 600 mm; 4C-16mm2 CU/XLPE/PVC direct buried armored cable; 4C-10mm2 CU/XLPE/PVC direct buried armored cable; 16mm2 CU/PVC wire; 10mm2 CU/PVC wire; 400V, 3PH, 60Hz lighting control panel (LCP-02); 38W, 230V, 1PH, 60Hz fence, led linear uplight lighting, IP66; physical units [680.46 h] |
| 1 | **Long Lead Time Items** | 2026-11-02 → 2026-11-09 (+7d) | 2026-11-29 → 2026-12-06 (+7d) |  |  |
| 2 | **Superstructure Works** | 2026-11-02 → 2026-11-09 (+7d) | 2026-11-29 → 2026-12-06 (+7d) |  |  |
| SL | **Sewage Pump Stations** | 2026-11-02 → 2026-11-09 (+7d) | 2026-11-15 → 2026-11-22 (+7d) |  |  |
| 1 | **Submission of Material** | 2026-11-02 → 2026-11-09 (+7d) | 2026-11-08 → 2026-11-15 (+7d) |  |  |
| ENG-MT-SPS-MC-S-100 | Material Submittal for Electromechanical Works for Pump Station | 2026-11-02 → 2026-11-09 (+7d) | 2026-11-08 → 2026-11-15 (+7d) | none → -103d | resources none → physical units [51.03 h] |
| 2 | **Approval of Material** | 2026-11-09 → 2026-11-16 (+7d) | 2026-11-15 → 2026-11-22 (+7d) |  |  |
| ENG-MT-SPS-MC-A-110 | Material Approval for Electromechanical Works for Pump Station | 2026-11-09 → 2026-11-16 (+7d) | 2026-11-15 → 2026-11-22 (+7d) | none → -103d | resources none → physical units [51.03 h] |
| SL1 | **Storage Tank (TSE)** | 2026-11-02 → 2026-11-09 (+7d) | 2026-11-29 → 2026-12-06 (+7d) |  |  |
| 1 | **Submission of Material** | 2026-11-02 → 2026-11-09 (+7d) | 2026-11-15 → 2026-11-22 (+7d) |  |  |
| ENG-MT-TSE-MC-S-110 | Material Submittal for Electromechanical Works for Storage Tank (TSE) | 2026-11-02 → 2026-11-09 (+7d) | 2026-11-15 → 2026-11-22 (+7d) | none → -115d | resources none → physical units [102.07 h] |
| 2 | **Approval of Material** | 2026-11-16 → 2026-11-23 (+7d) | 2026-11-29 → 2026-12-06 (+7d) |  |  |
| ENG-MT-TSE-MC-A-120 | Material Approval for Electromechanical Works for Storage Tank (TSE) | 2026-11-16 → 2026-11-23 (+7d) | 2026-11-29 → 2026-12-06 (+7d) | none → -115d | resources none → physical units [102.07 h] |
| PROC | **Procurement Cycle** |  | 2027-06-27 → 2027-06-30 (+3d) |  |  |
| NLL | **Short Lead Time Items** |  | 2027-05-09 → 2027-05-20 (+11d) |  |  |
| INF | **Infrastructure Networks** |  | 2027-05-09 → 2027-05-20 (+11d) |  |  |

| ID | Task | Start | Finish | Complete | Total float | Other |
| --- | --- | --- | --- | --- | --- | --- |
| SD | **Storm Drainage Network** | 2026-07-01 → 2026-06-22 (-9d) | 2027-03-16 → 2027-03-23 (+7d) |  |  |  |
| PO | **Issuance of Purchase Orders** | 2026-07-01 → 2026-06-22 (-9d) | 2026-12-07 → 2026-12-13 (+6d) |  |  |  |
| 1 | **Main Line Sections** | 2026-07-01 → 2026-06-22 (-9d) | 2026-11-03 → 2026-07-02 (-124d) |  |  |  |
| PRO-SD-PO-100 | Issuance of Purchase Order for Manholes of Storm Drainage Network | 2026-11-02 → 2026-06-22 A (-133d) | 2026-11-03 → 2026-06-23 A (-133d) | 0% → 100% |  | resources none → physical units [33.94 h] |
| PRO-SD-PO-110 | Issuance of Purchase Order for Main Line Pipes of Storm Drainage Network |  |  |  |  | resources none → physical units [33.94 h] |
| 2 | **Catch Basin Sections** | 2026-11-04 → 2026-07-04 (-123d) | 2026-11-16 → 2026-07-14 (-125d) |  |  |  |
| PRO-SD-PO-130 | Issuance of Purchase Order for Catch Basins of Storm Drainage Network | 2026-11-04 → 2026-07-04 A (-123d) | 2026-11-09 → 2026-07-07 A (-125d) | 0% → 100% |  | resources none → physical units [84.86 h] |
| PRO-SD-PO-150 | Issuance of Purchase Order for Catch Basin Pipes of Storm Drainage Network | 2026-11-10 → 2026-07-08 A (-125d) | 2026-11-16 → 2026-07-14 A (-125d) | 0% → 100% |  | resources none → physical units [101.83 h] |
| 3 | **Testing and Finishes** | 2026-11-17 → 2026-08-06 (-103d) | 2026-11-30 → 2026-09-05 (-86d) |  |  |  |
| PRO-SD-PO-120 | Issuance of Purchase Order for Manhole Covers of Storm Drainage Network | 2026-11-17 → 2026-08-06 A (-103d) | 2026-11-23 → 2026-08-12 A (-103d) | 0% → 100% |  | resources none → physical units [101.83 h] |
| PRO-SD-PO-140 | Issuance of Purchase Order for Catch Basin Covers of Storm Drainage Network | 2026-11-24 → 2026-08-30 A (-86d) | 2026-11-30 → 2026-09-05 A (-86d) | 0% → 100% |  | resources none → physical units [101.83 h] |
| TE1 | **Storm Drainage Ponds** | 2026-12-01 → 2026-12-07 (+6d) | 2026-12-07 → 2026-12-13 (+6d) |  |  |  |
| PRO-DPO-CV-PO-10 | Issuance of Purchase Order for Materials of Storm Drainage Ponds | 2026-12-01 → 2026-12-07 (+6d) | 2026-12-07 → 2026-12-13 (+6d) |  | none → -115d | resources none → physical units [101.83 h] |
| MF | **Manufacturing of Material** | 2026-07-05 → 2026-06-24 (-11d) | 2027-02-20 → 2027-02-25 (+5d) |  |  |  |
| 1 | **Main Line Sections** | 2026-07-05 → 2026-06-24 (-11d) | 2026-11-12 → 2026-07-07 (-128d) |  |  |  |
| PRO-SD-MF-100 | Manufacturing of Materials for Manholes of Storm Drainage Network | 2026-11-04 → 2026-06-24 A (-133d) | 2026-11-12 → 2026-07-02 A (-133d) | 0% → 100% |  | resources none → physical units [135.78 h] |
| PRO-SD-MF-110 | Manufacturing of Materials for Main Line Pipes of Storm Drainage Network |  |  |  |  | resources none → physical units [407.34 h] |
| 2 | **Catch Basin Sections** | 2026-11-10 → 2026-07-15 (-118d) | 2026-12-15 → 2026-09-15 (-91d) |  |  |  |
| PRO-SD-MF-150 | Manufacturing of Materials for Catch Basin Pipes of Storm Drainage Network | 2026-11-17 → 2026-07-15 A (-125d) | 2026-12-15 → 2026-08-12 A (-125d) | 0% → 100% |  | resources none → physical units [424.31 h] |
| PRO-SD-MF-130 | Manufacturing of Materials for Catch Basins of Storm Drainage Network | 2026-11-10 → 2026-08-18 A (-84d) | 2026-12-08 → 2026-09-15 A (-84d) | 0% → 100% |  | resources none → physical units [424.31 h] |
| 3 | **Testing and Finishes** | 2026-12-16 → 2026-08-13 (-125d) | 2027-02-11 → 2026-10-11 (-123d) |  |  |  |
| PRO-SD-MF-120 | Manufacturing of Materials for Manhole Covers of Storm Drainage Network | 2026-12-16 → 2026-08-13 A (-125d) | 2027-01-07 → 2026-09-05 A (-124d) | 0% → 100% |  | resources none → physical units [339.45 h] |
| PRO-SD-MF-140 | Manufacturing of Materials for Catch Basin Covers of Storm Drainage Network | 2027-01-09 → 2026-09-06 A (-125d) | 2027-02-11 → 2026-10-11 A (-123d) | 0% → 100% |  | resources none → physical units [509.17 h] |
| TE | **Storm Drainage Ponds** | 2026-12-08 → 2026-12-14 (+6d) | 2027-02-20 → 2027-02-25 (+5d) |  |  |  |
| PRO-DPO-CV-MF-10 | Manufacturing of Materials of Storm Drainage Ponds | 2026-12-08 → 2026-12-14 (+6d) | 2027-02-20 → 2027-02-25 (+5d) |  | none → -115d | resources none → physical units [1086.23 h] |
| 1DL | **1st Material Delivery & Site Inspection** | 2026-07-08 → 2026-07-04 (-4d) | 2027-02-24 → 2027-03-02 (+6d) |  |  |  |
| 1 | **Main Line Sections** | 2026-07-08 → 2026-07-04 (-4d) | 2026-11-17 → 2026-07-12 (-128d) |  |  |  |
| PRO-SD-1DL-100 | 1ST Material Delivery for Manholes of Storm Drainage Network | 2026-11-14 → 2026-07-04 A (-133d) | 2026-11-17 → 2026-07-07 A (-133d) | 0% → 100% |  | resources none → physical units [67.89 h] |
| PRO-SD-1DL-110 | 1ST Material Delivery for Main Line Pipes of Storm Drainage Network |  |  |  |  | resources none → physical units [67.89 h] |
| 2 | **Catch Basin Sections** | 2026-12-09 → 2026-09-16 (-84d) | 2026-12-20 → 2026-09-30 (-81d) |  |  |  |
| PRO-SD-1DL-130 | 1ST Material Delivery for Catch Basins of Storm Drainage Network | 2026-12-09 → 2026-09-16 A (-84d) | 2026-12-13 → 2026-09-20 A (-84d) | 0% → 100% |  | resources none → physical units [67.89 h] |
| PRO-SD-1DL-120 | 1ST Material Delivery for Catch Basin Pipes of Storm Drainage Network | 2026-12-16 → 2026-09-27 A (-80d) | 2026-12-20 → 2026-09-30 A (-81d) | 0% → 100% |  | resources none → physical units [67.89 h] |
| 3 | **Testing and Finishes** | 2027-01-09 → 2026-10-05 (-96d) | 2027-02-16 → 2026-10-15 (-124d) |  |  |  |
| PRO-SD-1DL-140 | 1ST Material Delivery for Manholes Covers of Storm Drainage Network | 2027-01-09 → 2026-10-05 A (-96d) | 2027-01-12 → 2026-10-08 A (-96d) | 0% → 100% |  | resources none → physical units [67.89 h] |
| PRO-SD-1DL-150 | 1ST Material Delivery for Catch Basin Covers of Storm Drainage Network | 2027-02-13 → 2026-10-12 A (-124d) | 2027-02-16 → 2026-10-15 A (-124d) | 0% → 100% |  | resources none → physical units [67.89 h] |
| TE2 | **Storm Drainage Ponds** | 2027-02-21 → 2027-02-27 (+6d) | 2027-02-24 → 2027-03-02 (+6d) |  |  |  |
| PRO-DPO-CV-1DL-10 | 1ST Material Delivery for Materials of Drainage Ponds | 2027-02-21 → 2027-02-27 (+6d) | 2027-02-24 → 2027-03-02 (+6d) |  | none → -115d | resources none → physical units [67.89 h] |
| DL | **Material Delivery & Site Inspection** |  | 2027-03-16 → 2027-03-23 (+7d) |  |  |  |
| 1 | **Main Line Sections** |  | 2026-12-16 → 2026-11-01 (-45d) |  |  |  |
| PRO-R25-SD-DL-120 | Material Delivery & Site Inspection of Main Line Pipes of Storm Drainage Network |  | 2026-12-16 → 2026-11-01 A (-45d) | 95% → 100% |  | resources Depth Between 0m to 1.50m; Depth Between 1.50m to 2.50m; Depth Between 2.50m to 3.50m; Depth > 3.50m; Depth Between 3.50m to 4.50m; Depth > 4.50m; GRP Pipe, 900mm diameter with Depth Between 3.51m to 4.50m → Depth Between 0m to 1.50m; Depth Between 1.50m to 2.50m; Depth Between 2.50m to 3.50m; Depth > 3.50m; Depth Between 3.50m to 4.50m; Depth > 4.50m; GRP Pipe, 900mm diameter with Depth Between 3.51m to 4.50m; physical units [254.58 h] |
| PRO-R25-SD-DL-100 | Material Delivery & Site Inspection of Manholes of Storm Drainage Network | 2026-11-18 → 2026-10-21 A (-28d) | 2026-11-29 → 2026-11-01 A (-28d) | 0% → 100% |  | resources MH depth 1.5 - 2.5m; MH depth 2.5 - 3.5m; MH depth 3.5 - 4.5m; MH depth > 4.50m; MH depth 2.5 -3.5m; MH depth > 3.50m → MH depth 1.5 - 2.5m; MH depth 2.5 - 3.5m; MH depth 3.5 - 4.5m; MH depth > 4.50m; MH depth 2.5 -3.5m; MH depth > 3.50m; physical units [169.72 h] |
| 2 | **Catch Basin Sections** | 2026-12-14 → 2026-09-21 (-84d) | 2026-12-30 → 2026-10-08 (-83d) |  |  |  |
| PRO-R25-SD-DL-130 | Material Delivery & Site Inspection of Catch Basins for Storm Drainage Network | 2026-12-14 → 2026-09-21 A (-84d) | 2026-12-22 → 2026-09-30 A (-83d) | 0% → 100% |  | resources Single Catch Basin 1000mm x 1000mm; Double Catch Basin 1200mm x 2300mm → Single Catch Basin 1000mm x 1000mm; Double Catch Basin 1200mm x 2300mm; physical units [135.78 h] |
| PRO-R25-SD-DL-110 | Material Delivery & Site Inspection of Catch Basin Pipes for Storm Drainage Network | 2026-12-23 → 2026-10-01 A (-83d) | 2026-12-30 → 2026-10-08 A (-83d) | 0% → 100% |  | resources Depth Between 0m to 1.50m; Depth Between 1.50m to 2.50m; Depth Between 2.50m to 3.50m; Depth > 3.50m; Depth Between 3.50m to 4.50m; Depth > 4.50m; GRP Pipe, 900mm diameter with Depth Between 3.51m to 4.50m → Depth Between 0m to 1.50m; Depth Between 1.50m to 2.50m; Depth Between 2.50m to 3.50m; Depth > 3.50m; Depth Between 3.50m to 4.50m; Depth > 4.50m; GRP Pipe, 900mm diameter with Depth Between 3.51m to 4.50m; physical units [118.81 h] |
| 3 | **Testing and Finishes** | 2027-01-13 → 2026-10-10 (-95d) | 2027-03-04 → 2026-11-01 (-123d) |  |  |  |
| PRO-R25-SD-DL-140 | Material Delivery & Site Inspection of Manholes Covers for Storm Drainage Network | 2027-01-13 → 2026-10-10 A (-95d) | 2027-02-04 → 2026-11-01 A (-95d) | 0% → 100% |  | resources MH depth 1.5 - 2.5m; MH depth 2.5 - 3.5m; MH depth 3.5 - 4.5m; MH depth > 4.50m; MH depth 2.5 -3.5m; MH depth > 3.50m → MH depth 1.5 - 2.5m; MH depth 2.5 - 3.5m; MH depth 3.5 - 4.5m; MH depth > 4.50m; MH depth 2.5 -3.5m; MH depth > 3.50m; physical units [339.45 h] |
| PRO-R25-SD-DL-150 | Material Delivery & Site Inspection of Catch Basin Covers for Storm Drainage Network | 2027-02-17 → 2026-10-17 A (-123d) | 2027-03-04 → 2026-11-01 A (-123d) | 0% → 100% |  | resources Single Catch Basin 1000mm x 1000mm; Double Catch Basin 1200mm x 2300mm → Single Catch Basin 1000mm x 1000mm; Double Catch Basin 1200mm x 2300mm; physical units [237.61 h] |
| TE3 | **Storm Drainage Ponds** | 2027-02-25 → 2027-03-04 (+7d) | 2027-03-16 → 2027-03-23 (+7d) |  |  |  |
| PRO-DPO-CV-DL-10 | Material Delivery & Site Inspection for Materials of Storm Drainage Ponds | 2027-02-25 → 2027-03-04 (+7d) | 2027-03-16 → 2027-03-23 (+7d) |  | none → -116d | resources Finished grouted riprap for Pond 300mm as per drawings → Finished grouted riprap for Pond 300mm as per drawings; physical units [237.61 h] |
| SW | **Sewage Network** | 2026-11-02 → 2026-09-29 (-34d) | 2026-12-19 → 2026-12-14 (-5d) |  |  |  |
| PO | **Issuance of Purchase Orders** | 2026-11-02 → 2026-09-29 (-34d) | 2026-11-25 → 2026-10-22 (-34d) |  |  |  |
| 1 | **Main Line Sections** | 2026-11-02 → 2026-09-29 (-34d) | 2026-11-17 → 2026-10-14 (-34d) |  |  |  |
| PRO-SW-PO-100 | Issuance of Purchase Order for Main Line Pipes of Sewage Network | 2026-11-02 → 2026-09-29 A (-34d) | 2026-11-09 → 2026-10-06 A (-34d) | 0% → 100% |  | resources none → physical units [118.81 h] |
| PRO-SW-PO-110 | Issuance of Purchase Order for Manhole of Sewage Network | 2026-11-10 → 2026-10-07 A (-34d) | 2026-11-17 → 2026-10-14 A (-34d) | 0% → 100% |  | resources none → physical units [118.81 h] |
| 3 | **Testing and Finishes** | 2026-11-18 → 2026-10-15 (-34d) | 2026-11-25 → 2026-10-22 (-34d) |  |  |  |
| PRO-SW-PO-120 | Issuance of Purchase Order for Manhole Covers of Sewage Network | 2026-11-18 → 2026-10-15 A (-34d) | 2026-11-25 → 2026-10-22 A (-34d) | 0% → 100% |  | resources none → physical units [118.81 h] |
| MF | **Manufacturing of Material** | 2026-11-10 → 2026-10-19 (-22d) | 2026-12-02 → 2026-10-29 (-34d) |  |  |  |
| 1 | **Main Line Sections** | 2026-11-10 → 2026-10-19 (-22d) | 2026-11-29 → 2026-10-29 (-31d) |  |  |  |
| PRO-SW-MF-100 | Manufacturing of Main Line Pipes for Sewage Network | 2026-11-10 → 2026-10-19 A (-22d) | 2026-11-21 → 2026-10-29 A (-23d) | 0% → 100% |  | resources none → physical units [169.72 h] |
| PRO-SW-MF-110 | Manufacturing of Manholes for Sewage Network | 2026-11-18 → 2026-10-19 A (-30d) | 2026-11-29 → 2026-10-29 A (-31d) | 0% → 100% |  | resources none → physical units [169.72 h] |
| 3 | **Testing and Finishes** | 2026-11-26 → 2026-10-24 (-33d) | 2026-12-02 → 2026-10-29 (-34d) |  |  |  |
| PRO-SW-MF-120 | Manufacturing of Manhole Covers for Sewage Network | 2026-11-26 → 2026-10-24 A (-33d) | 2026-12-02 → 2026-10-29 A (-34d) | 0% → 100% |  | resources none → physical units [101.83 h] |
| 1DL | **1st Material Delivery & Site Inspection** | 2026-11-22 → 2026-10-31 (-22d) |  |  |  |  |
| 1 | **Main Line Sections** | 2026-11-22 → 2026-10-31 (-22d) | 2026-12-07 → 2026-12-08 (+1d) |  |  |  |
| PRO-SW-1DL-100 | 1ST Material Delivery for Main Line Pipes of Sewage Network | 2026-11-22 → 2026-10-31 A (-22d) | 2026-11-25 → 2026-11-10 (-15d) | 0% → 50% | none → -61d | resources none → physical units [67.89 h] |
| PRO-SW-1DL-110 | 1ST Material Delivery for Manholes of Sewage Network | 2026-12-03 → 2026-10-31 A (-33d) | 2026-12-07 → 2026-12-08 (+1d) | 0% → 50% | none → -83d | resources none → physical units [67.89 h] |
| 3 | **Testing and Finishes** | 2026-12-08 → 2026-11-01 (-37d) |  |  |  |  |
| PRO-SW-1DL-120 | 1ST Material Delivery for Manholes Covers of Sewage Network | 2026-12-08 → 2026-11-01 A (-37d) |  | 0% → 50% | none → -78d | resources none → physical units [33.94 h] |
| DL | **Material Delivery & Site Inspection** | 2026-12-08 → 2026-10-31 (-38d) | 2026-12-19 → 2026-12-14 (-5d) |  |  |  |
| 1 | **Main Line Sections** | 2026-12-08 → 2026-10-31 (-38d) | 2026-12-19 → 2026-12-14 (-5d) |  |  |  |

| ID | Task | Start | Finish | Complete | Total float | Other |
| --- | --- | --- | --- | --- | --- | --- |
| PRO-R25-SW-DL-100 | Material Delivery & Site Inspection of Main Line Pipes for Sewage Network | 2026-12-15 → 2026-10-31 A (-45d) | 2026-12-19 → 2026-12-14 (-5d) | 0% → 50% | none → -78d | resources Depth Between 0m to 1.50m; Depth Between 1.50m to 2.50m; Depth > 2.50m; Depth Between 2.50m to 3.50m; Depth Between 3.50m to 4.50m; Depth Between 4.50m to 5.50m; Depth > 5.50m; HDPE Force Main (PE 100, SDR 11, PN 16 bar) DN 160 mm diameter, in trenches depth: 0- 1.5m; HDPE Force Main (PE 100, SDR 11, PN 16 bar) DN 160 mm diameter, in trenches depth: 1.51- 2.5m; Air valves with dia 50 mm; Gate valves Dia 50 mm; Air valve chamber (1000x 1000 mm) → Depth Between 0m to 1.50m; Depth Between 1.50m to 2.50m; Depth > 2.50m; Depth Between 2.50m to 3.50m; Depth Between 3.50m to 4.50m; Depth Between 4.50m to 5.50m; Depth > 5.50m; HDPE Force Main (PE 100, SDR 11, PN 16 bar) DN 160 mm diameter, in trenches depth: 0- 1.5m; HDPE Force Main (PE 100, SDR 11, PN 16 bar) DN 160 mm diameter, in trenches depth: 1.51- 2.5m; Air valves with dia 50 mm; Gate valves Dia 50 mm; Air valve chamber (1000x 1000 mm); physical units [67.89 h] |
| PRO-R25-SW-DL-110 | Material Delivery & Site Inspection of Manholes for Sewage Network | 2026-12-08 → 2026-10-31 A (-38d) | 2026-12-12 → 2026-12-10 (-2d) | 0% → 50% | none → -83d | resources Depth: 0 - 1.5m; Depth: 1.51 - 2.5m; Depth: 2.51 - 3.5m; Depth: 3.51 - 4.5m; Depth: 4.51 - 5.5m; Depth > 5.50m → Depth: 0 - 1.5m; Depth: 1.51 - 2.5m; Depth: 2.51 - 3.5m; Depth: 3.51 - 4.5m; Depth: 4.51 - 5.5m; Depth > 5.50m; physical units [67.89 h] |
| 3 | **Testing and Finishes** | 2026-12-10 → 2026-10-31 (-40d) | 2026-12-14 → 2026-12-12 (-2d) |  |  |  |
| PRO-R25-SW-DL-120 | Material Delivery & Site Inspection of Manholes Covers for Sewage Network | 2026-12-10 → 2026-10-31 A (-40d) | 2026-12-14 → 2026-12-12 (-2d) | 0% → 50% | none → -78d | resources Depth: 0 - 1.5m; Depth: 1.51 - 2.5m; Depth: 2.51 - 3.5m; Depth: 3.51 - 4.5m; Depth: 4.51 - 5.5m; Depth > 5.50m → Depth: 0 - 1.5m; Depth: 1.51 - 2.5m; Depth: 2.51 - 3.5m; Depth: 3.51 - 4.5m; Depth: 4.51 - 5.5m; Depth > 5.50m; physical units [67.89 h] |
| TSE | **Treated Sewage Effluent (Tse)** | 2026-11-02 → 2026-11-09 (+7d) | 2026-12-31 → 2027-01-07 (+7d) |  |  |  |
| PO | **Issuance of Purchase Orders** | 2026-11-02 → 2026-11-09 (+7d) | 2026-11-09 → 2026-11-16 (+7d) |  |  |  |
| PRO-TSE-PO-120 | Issuance of Purchase Order for Materials of Treated Sewage Effluent (Tse) | 2026-11-02 → 2026-11-09 (+7d) | 2026-11-09 → 2026-11-16 (+7d) |  | none → -100d | resources none → physical units [118.81 h] |
| MF | **Manufacturing of Material** | 2026-11-10 → 2026-11-17 (+7d) | 2026-12-07 → 2026-12-14 (+7d) |  |  |  |
| PRO-TSE-MF-120 | Manufacturing of Materials for Treated Sewage Effluent (Tse) | 2026-11-10 → 2026-11-17 (+7d) | 2026-12-07 → 2026-12-14 (+7d) |  | none → -100d | resources none → physical units [407.34 h] |
| 1DL | **1st Material Delivery & Site Inspection** | 2026-12-08 → 2026-12-15 (+7d) | 2026-12-15 → 2026-12-22 (+7d) |  |  |  |
| PRO-TSE-1DL-120 | 1ST Material Delivery for Materials of Treated Sewage Effluent (Tse) | 2026-12-08 → 2026-12-15 (+7d) | 2026-12-15 → 2026-12-22 (+7d) |  | none → -100d | resources none → physical units [118.81 h] |
| DL | **Material Delivery & Site Inspection** | 2026-12-16 → 2026-12-23 (+7d) | 2026-12-31 → 2027-01-07 (+7d) |  |  |  |
| PRO-R25-TSE-DL-120 | Material Delivery & Site Inspection of Materials for Treated Sewage Effluent (Tse) | 2026-12-16 → 2026-12-23 (+7d) | 2026-12-31 → 2027-01-07 (+7d) |  | none → -100d | resources Depth Between 0m to 1.50m; Depth Between 1.50m to 2.50m; Depth > 2.50m; Gate valves dia 50 mm; Gate valves dia 100 mm; Gate valves dia 150 mm; Gate valves dia 200 mm; Air valves with dia 50 mm; Washout valve dia 100 mm; Wash out chamber (2500x 2500mm); Air valve chamber (1000x 1000 mm); Flow meter chamber (1500x 3000 mm); Flow meter dia 150 mm; Glass Fused Bolted (GLS) 1500 m3 Tank with associated accessories & manufacturer recommendation for the foundation → Depth Between 0m to 1.50m; Depth Between 1.50m to 2.50m; Depth > 2.50m; Gate valves dia 50 mm; Gate valves dia 100 mm; Gate valves dia 150 mm; Gate valves dia 200 mm; Air valves with dia 50 mm; Washout valve dia 100 mm; Wash out chamber (2500x 2500mm); Air valve chamber (1000x 1000 mm); Flow meter chamber (1500x 3000 mm); Flow meter dia 150 mm; Glass Fused Bolted (GLS) 1500 m3 Tank with associated accessories & manufacturer recommendation for the foundation; physical units [237.61 h] |
| PW | **Potable Water Network** |  | 2027-04-10 → 2027-04-17 (+7d) |  |  |  |
| PO | **Issuance of Purchase Orders** |  | 2026-11-14 → 2026-11-21 (+7d) |  |  |  |
| PRO-PW-PO-100 | Issuance of Purchase Order for Main Line Pipes and Materials of Potable Water Network |  |  |  |  | resources none → physical units [186.7 h] |
| PRO-PW-PO-110 | Issuance of Purchase Order for Valves of Potable Water Network |  |  |  |  | resources none → physical units [186.7 h] |
| 3 | **Fire Hydrant** | 2026-11-02 → 2026-11-09 (+7d) | 2026-11-07 → 2026-11-14 (+7d) |  |  |  |
| PRO-PW-PO-120 | Issuance of Purchase Order for Fire Hydrants of Potable Water Network | 2026-11-02 → 2026-11-09 (+7d) | 2026-11-07 → 2026-11-14 (+7d) |  | none → -104d | resources none → physical units [84.86 h] |
| 4 | **Testing and Finishes** | 2026-11-08 → 2026-11-15 (+7d) | 2026-11-14 → 2026-11-21 (+7d) |  |  |  |
| PRO-PW-PO-130 | Issuance of Purchase Order for Surface Box of Potable Water Network | 2026-11-08 → 2026-11-15 (+7d) | 2026-11-14 → 2026-11-21 (+7d) |  | none → -104d | resources none → physical units [101.83 h] |
| MF | **Manufacturing of Material** |  | 2027-01-11 → 2027-01-18 (+7d) |  |  |  |
| 1 | **Main Line Sections** |  | 2026-11-29 → 2026-12-06 (+7d) |  |  |  |
| PRO-PW-MF-100 | Manufacturing of Main Line Pipes and Materials for Potable Water Network |  |  |  |  | resources none → physical units [577.06 h] |
| PRO-PW-MF-110 | Manufacturing of Valves for Potable Water Network | 2026-11-02 → 2026-11-09 (+7d) | 2026-11-29 → 2026-12-06 (+7d) |  | none → -59d | resources none → physical units [407.34 h] |
| 3 | **Fire Hydrant** | 2026-11-30 → 2026-12-07 (+7d) | 2026-12-16 → 2026-12-23 (+7d) |  |  |  |
| PRO-PW-MF-120 | Manufacturing of Fire Hydrants for Potable Water Network | 2026-11-30 → 2026-12-07 (+7d) | 2026-12-16 → 2026-12-23 (+7d) |  | none → -59d | resources none → physical units [254.58 h] |
| 4 | **Testing and Finishes** | 2026-11-15 → 2026-11-22 (+7d) | 2027-01-11 → 2027-01-18 (+7d) |  |  |  |
| PRO-PW-MF-130 | Manufacturing for Surface Box of Potable Water Network | 2026-11-15 → 2026-11-22 (+7d) | 2027-01-11 → 2027-01-18 (+7d) |  | none → -90d | resources none → physical units [848.62 h] |
| 1DL | **1st Material Delivery & Site Inspection** |  | 2027-01-19 → 2027-01-26 (+7d) |  |  |  |
| 1 | **Main Line Sections** |  | 2027-01-19 → 2027-01-26 (+7d) |  |  |  |
| PRO-PW-1DL-100 | 1ST Material Delivery for Main Line Pipes and Materials of Potable Water Network |  |  |  |  | resources none → physical units [118.81 h] |
| PRO-PW-1DL-110 | 1ST Material Delivery for Valves of Potable Water Network | 2027-01-12 → 2027-01-19 (+7d) | 2027-01-19 → 2027-01-26 (+7d) |  | none → -89d | resources none → physical units [118.81 h] |
| 3 | **Fire Hydrant** | 2027-01-12 → 2027-01-19 (+7d) | 2027-01-19 → 2027-01-26 (+7d) |  |  |  |
| PRO-PW-1DL-120 | 1ST Material Delivery for Fire Hydrants of Potable Water Network | 2027-01-12 → 2027-01-19 (+7d) | 2027-01-19 → 2027-01-26 (+7d) |  | none → -81d | resources none → physical units [118.81 h] |
| 4 | **Testing and Finishes** | 2027-01-12 → 2027-01-19 (+7d) | 2027-01-19 → 2027-01-26 (+7d) |  |  |  |
| PRO-PW-1DL-130 | 1ST Material Delivery for Finishes of Potable Water Network | 2027-01-12 → 2027-01-19 (+7d) | 2027-01-19 → 2027-01-26 (+7d) |  | none → -82d | resources none → physical units [118.81 h] |
| DL | **Material Delivery & Site Inspection** |  | 2027-04-10 → 2027-04-17 (+7d) |  |  |  |
| 1 | **Main Line Sections** |  | 2027-02-13 → 2027-02-20 (+7d) |  |  |  |
| PRO-R25-PW-DL-100 | Material Delivery & Site Inspection of Main Line Pipes and Materials for Potable Water Network |  |  |  |  | resources Depth Between 0m to 1.50m; Depth Between 1.50m to 2.50m; Depth > 2.50m; Glass Fused Bolted (GLS) 1500 m3 Tank with associated accessories & manufacturer recommendation for the foundation → Depth Between 0m to 1.50m; Depth Between 1.50m to 2.50m; Depth > 2.50m; Glass Fused Bolted (GLS) 1500 m3 Tank with associated accessories & manufacturer recommendation for the foundation; physical units [356.42 h] |
| PRO-R25-PW-DL-110 | Material Delivery & Site Inspection of Valves for Potable Water Network | 2027-01-20 → 2027-01-27 (+7d) | 2027-02-13 → 2027-02-20 (+7d) |  | none → -89d | resources Gate valves Dia 50 mm; Gate valves Dia 100 mm; Gate valves Dia 150 mm; Gate valves Dia 250 mm; Air valves with Dia 50 mm; Washout valve Dia 100 mm; Wash out chamber (2500x 2500mm); Air valve chamber (1000x 1000 mm); Flow meter chamber (1500x 2500 mm); Flow meter dia 100 mm → Gate valves Dia 50 mm; Gate valves Dia 100 mm; Gate valves Dia 150 mm; Gate valves Dia 250 mm; Air valves with Dia 50 mm; Washout valve Dia 100 mm; Wash out chamber (2500x 2500mm); Air valve chamber (1000x 1000 mm); Flow meter chamber (1500x 2500 mm); Flow meter dia 100 mm; physical units [356.42 h] |
| 3 | **Fire Hydrant** | 2027-01-20 → 2027-01-27 (+7d) | 2027-01-26 → 2027-02-02 (+7d) |  |  |  |
| PRO-R25-PW-DL-120 | Material Delivery & Site Inspection of Fire Hydrants for Potable Water Network | 2027-01-20 → 2027-01-27 (+7d) | 2027-01-26 → 2027-02-02 (+7d) |  | none → -77d | resources 3-outlet fire hydrant (2 x 2.5 inch and 1 x 4.5 inch) in the form of a separate dry vacuum cylinder, complete according to drawings. → 3-outlet fire hydrant (2 x 2.5 inch and 1 x 4.5 inch) in the form of a separate dry vacuum cylinder, complete according to drawings.; physical units [101.83 h] |
| 4 | **Testing and Finishes** | 2027-01-20 → 2027-01-27 (+7d) | 2027-04-10 → 2027-04-17 (+7d) |  |  |  |
| PRO-R25-PW-DL-130 | Material Delivery & Site Inspection for Finishes of Potable Water Network | 2027-01-20 → 2027-01-27 (+7d) | 2027-04-10 → 2027-04-17 (+7d) |  | none → -82d | resources Depth Between 0m to 1.50m; Depth Between 1.50m to 2.50m; Depth > 2.50m → Depth Between 0m to 1.50m; Depth Between 1.50m to 2.50m; Depth > 2.50m; physical units [1120.17 h] |
| IR | **Irrigation Network** | 2026-11-15 → 2026-11-22 (+7d) | 2027-02-09 → 2027-02-16 (+7d) |  |  |  |
| PO | **Issuance of Purchase Orders** | 2026-11-15 → 2026-11-22 (+7d) | 2026-11-24 → 2026-12-01 (+7d) |  |  |  |
| 1 | **Main Line Pipes** | 2026-11-15 → 2026-11-22 (+7d) | 2026-11-24 → 2026-12-01 (+7d) |  |  |  |
| PRO-IR-PO-100 | Issuance of Purchase Order for Main Line Pipes of Irrigation Network | 2026-11-15 → 2026-11-22 (+7d) | 2026-11-19 → 2026-11-26 (+7d) |  | none → -104d | resources none → physical units [84.86 h] |
| PRO-IR-PO-110 | Issuance of Purchase Order for Valves of Irrigation Network | 2026-11-21 → 2026-11-28 (+7d) | 2026-11-24 → 2026-12-01 (+7d) |  | none → -104d | resources none → physical units [67.89 h] |
| MF | **Manufacturing of Material** | 2026-11-21 → 2026-11-28 (+7d) | 2027-01-07 → 2027-01-14 (+7d) |  |  |  |
| 1 | **Main Line Pipes** | 2026-11-21 → 2026-11-28 (+7d) | 2027-01-07 → 2027-01-14 (+7d) |  |  |  |
| PRO-IR-MF-100 | Manufacturing of Main Line Pipes for Irrigation Network | 2026-11-21 → 2026-11-28 (+7d) | 2026-12-14 → 2026-12-21 (+7d) |  | none → -88d | resources none → physical units [356.42 h] |
| PRO-IR-MF-110 | Manufacturing of Valves for Irrigation Network | 2026-12-15 → 2026-12-22 (+7d) | 2027-01-07 → 2027-01-14 (+7d) |  | none → -88d | resources none → physical units [356.42 h] |
| 1DL | **1st Material Delivery & Site Inspection** | 2026-12-15 → 2026-12-22 (+7d) | 2027-01-16 → 2027-01-23 (+7d) |  |  |  |
| 1 | **Main Line Pipes** | 2026-12-15 → 2026-12-22 (+7d) | 2027-01-16 → 2027-01-23 (+7d) |  |  |  |
| PRO-IR-1DL-100 | 1ST Material Delivery for Main Line Pipes of Irrigation Network | 2026-12-15 → 2026-12-22 (+7d) | 2026-12-22 → 2026-12-29 (+7d) |  | none → -88d | resources none → physical units [118.81 h] |
| PRO-IR-1DL-110 | 1ST Material Delivery for Valves of Irrigation Network | 2027-01-09 → 2027-01-16 (+7d) | 2027-01-16 → 2027-01-23 (+7d) |  | none → -88d | resources none → physical units [118.81 h] |
| DL | **Material Delivery & Site Inspection** | 2026-12-23 → 2026-12-30 (+7d) | 2027-02-09 → 2027-02-16 (+7d) |  |  |  |
| 1 | **Main Line Pipes** | 2026-12-23 → 2026-12-30 (+7d) | 2027-02-09 → 2027-02-16 (+7d) |  |  |  |
| PRO-R25-IR-DL-100 | Material Delivery & Site Inspection of Main Line Pipes for Irrigation Network | 2026-12-23 → 2026-12-30 (+7d) | 2027-01-16 → 2027-01-23 (+7d) |  | none → -88d | resources pipe line O.D 32 mm PN 10, in depth 0 to 1.5 m; pipe line O.D 40 mm PN 10, in depth 0 to 1.5 m; pipe line O.D 50 mm PN 10, in depth 0 to 1.5 m → pipe line O.D 32 mm PN 10, in depth 0 to 1.5 m; pipe line O.D 40 mm PN 10, in depth 0 to 1.5 m; pipe line O.D 50 mm PN 10, in depth 0 to 1.5 m; physical units [356.42 h] |
| PRO-R25-IR-DL-110 | Material Delivery & Site Inspection of Valves for Irrigation Network | 2027-01-17 → 2027-01-24 (+7d) | 2027-02-09 → 2027-02-16 (+7d) |  | none → -88d | resources Gate valve 50 mm PN16; Direct Burried Gate valve 40 mm PN16; Pressure–compensating bubblers 110 Lit/Hr; Flushing Bronze gate valve dia 1.5" inside PVC box; Air release valve 1.5" inside PVC box; Extra flexible pressure compensating on surface inline dripline`s, O.D. is 16.1 mm; Electrical Solenoid Valve ( 1.5") inside PVC box; Electrical Solenoid Valve ( 2") inside PVC box; Quick coupling valve 1" inside a round valve box 10" size with a manual gate valve, hose swivel and key with all accessories; Advanced Irrigation controller subject to client approval, can connect with Centarl Control system and cabable to integrate with Smart City systems,BMS or Scada system ,Can record the real flow rate per stations; Decoder cables 12 AWG between valves and controllers, The cables shall be pulled through 32? UPVC conduit and inspection 10" round valve box every 100 meters, as per standard specification and drawings; Preparing the irrigation program for the entire system and providing technical services for monitoring and controlling the central irrigation systems by linking the controller with the Main Program System (by GSM). → Gate valve 50 mm PN16; Direct Burried Gate valve 40 mm PN16; Pressure–compensating bubblers 110 Lit/Hr; Flushing Bronze gate valve dia 1.5" inside PVC box; Air release valve 1.5" inside PVC box; Extra flexible pressure compensating on surface inline dripline`s, O.D. is 16.1 mm; Electrical Solenoid Valve ( 1.5") inside PVC box; Electrical Solenoid Valve ( 2") inside PVC box; Quick coupling valve 1" inside a round valve box 10" size with a manual gate valve, hose swivel and key with all accessories; Advanced Irrigation controller subject to client approval, can connect with Centarl Control system and cabable to integrate with Smart City systems,BMS or Scada system ,Can record the real flow rate per stations; Decoder cables 12 AWG between valves and controllers, The cables shall be pulled through 32? UPVC conduit and inspection 10" round valve box every 100 meters, as per standard specification and drawings; Preparing the irrigation program for the entire system and providing technical services for monitoring and controlling the central irrigation systems by linking the controller with the Main Program System (by GSM).; physical units [356.42 h] |
| MV | **Medium Voltage Network** | 2026-11-25 → 2026-12-02 (+7d) | 2027-02-09 → 2027-02-16 (+7d) |  |  |  |
| PO | **Issuance of Purchase Orders** | 2026-11-25 → 2026-12-02 (+7d) | 2026-12-01 → 2026-12-08 (+7d) |  |  |  |
| PRO-MV-PO-100 | Issuance of Purchase Order for Medium Voltage Materials of Medium Voltage Network | 2026-11-25 → 2026-12-02 (+7d) | 2026-12-01 → 2026-12-08 (+7d) |  | none → -104d | resources none → physical units [101.83 h] |
| MF | **Manufacturing of Material** | 2026-12-02 → 2026-12-09 (+7d) | 2026-12-26 → 2027-01-02 (+7d) |  |  |  |
| PRO-MV-MF-100 | Manufacturing of Medium Voltage Materials for Medium Voltage Network | 2026-12-02 → 2026-12-09 (+7d) | 2026-12-26 → 2027-01-02 (+7d) |  | none → -81d | resources none → physical units [356.42 h] |
| 1DL | **1st Material Delivery & Site Inspection** | 2026-12-27 → 2027-01-03 (+7d) | 2027-01-03 → 2027-01-10 (+7d) |  |  |  |
| PRO-MV-1DL-100 | 1ST Material Delivery for Medium Voltage Materials of Medium Voltage Network | 2026-12-27 → 2027-01-03 (+7d) | 2027-01-03 → 2027-01-10 (+7d) |  | none → -81d | resources none → physical units [118.81 h] |
| DL | **Material Delivery & Site Inspection** | 2027-01-17 → 2027-01-24 (+7d) | 2027-02-09 → 2027-02-16 (+7d) |  |  |  |

| ID | Task | Start | Finish | Complete | Total float | Other |
| --- | --- | --- | --- | --- | --- | --- |
| PRO-MV-DL-100 | Material Delivery & Site Inspection of Medium Voltage Materials for Medium Voltage Network | 2027-01-17 → 2027-01-24 (+7d) | 2027-02-09 → 2027-02-16 (+7d) |  | none → -87d | resources Excavation for Trench size 40cm wide and 80cm deep (for 1 cable); Excavation for Trench Size 60cm wide and 80cm deep (for 2 cables); Excavation for Trench Size 90cm wide and 80cm deep (for 3 cables); Excavation for Trench Size 180cm wide and 80cm deep (for 6 cables); Excavation for Trench Size 210 cm wide and 80cm deep (for 7 cables); Excavation for Trench Size 240cm wide and 80cm deep (for 8 cables); Duct bank for (33) cables; Duct bank for (21) cables; Duct bank for (15) cables; HV Cable Road Crossing → Excavation for Trench size 40cm wide and 80cm deep (for 1 cable); Excavation for Trench Size 60cm wide and 80cm deep (for 2 cables); Excavation for Trench Size 90cm wide and 80cm deep (for 3 cables); Excavation for Trench Size 180cm wide and 80cm deep (for 6 cables); Excavation for Trench Size 210 cm wide and 80cm deep (for 7 cables); Excavation for Trench Size 240cm wide and 80cm deep (for 8 cables); Duct bank for (33) cables; Duct bank for (21) cables; Duct bank for (15) cables; HV Cable Road Crossing; physical units [356.42 h] |
| LV | **Low Voltage Network** | 2026-11-02 → 2026-11-09 (+7d) | 2027-04-12 → 2027-04-19 (+7d) |  |  |  |
| PO | **Issuance of Purchase Orders** | 2026-11-02 → 2026-11-09 (+7d) | 2026-12-03 → 2026-12-10 (+7d) |  |  |  |
| 1 | **Main Low Voltage Cables Works** | 2026-11-02 → 2026-11-09 (+7d) | 2026-11-09 → 2026-11-16 (+7d) |  |  |  |
| PRO-LV-ML-PO-100 | Issuance of Purchase Order for Main Low Voltage Cables of Low Voltage Network | 2026-11-02 → 2026-11-09 (+7d) | 2026-11-09 → 2026-11-16 (+7d) |  | none → -116d | resources none → physical units [118.81 h] |
| 2 | **Service Low Voltage Cables Works** | 2026-11-02 → 2026-11-09 (+7d) | 2026-11-09 → 2026-11-16 (+7d) |  |  |  |
| PRO-LV-HC-PO-100 | Issuance of Purchase Order for Service Low Voltage Cables of Low Voltage Network | 2026-11-02 → 2026-11-09 (+7d) | 2026-11-09 → 2026-11-16 (+7d) |  | none → -115d | resources none → physical units [118.81 h] |
| 3 | **Distribution Pillar Works** | 2026-11-10 → 2026-11-17 (+7d) | 2026-11-25 → 2026-12-02 (+7d) |  |  |  |
| PRO-LV-DP-PO-100 | Issuance of Purchase Order for Distribution Pillars of Low Voltage Network | 2026-11-10 → 2026-11-17 (+7d) | 2026-11-17 → 2026-11-24 (+7d) |  | none → -115d | resources none → physical units [118.81 h] |
| PRO-LV-DP-PO-110 | Issuance of Purchase Order for Low Voltage Earthing of Low Voltage Network | 2026-11-18 → 2026-11-25 (+7d) | 2026-11-25 → 2026-12-02 (+7d) |  | none → -115d | resources none → physical units [118.81 h] |
| 4 | **Termination and Testing Works** | 2026-11-26 → 2026-12-03 (+7d) | 2026-12-03 → 2026-12-10 (+7d) |  |  |  |
| PRO-LV-TT-PO-100 | Issuance of Purchase Order for Cable Lugs of Low Voltage Network | 2026-11-26 → 2026-12-03 (+7d) | 2026-12-03 → 2026-12-10 (+7d) |  | none → -115d | resources none → physical units [118.81 h] |
| MF | **Manufacturing of Material** | 2026-11-10 → 2026-11-17 (+7d) | 2027-02-23 → 2027-03-02 (+7d) |  |  |  |
| 1 | **Main Low Voltage Cables Works** | 2026-11-10 → 2026-11-17 (+7d) | 2026-12-14 → 2026-12-21 (+7d) |  |  |  |
| PRO-LV-ML-MF-100 | Manufacturing of Main Low Voltage Cables for Low Voltage Network | 2026-11-10 → 2026-11-17 (+7d) | 2026-12-14 → 2026-12-21 (+7d) |  | none → -116d | resources none → physical units [509.17 h] |
| 2 | **Service Low Voltage Cables Works** | 2026-11-10 → 2026-11-17 (+7d) | 2026-12-14 → 2026-12-21 (+7d) |  |  |  |
| PRO-LV-HC-MF-100 | Manufacturing of Service Low Voltage Cables for Low Voltage Network | 2026-11-10 → 2026-11-17 (+7d) | 2026-12-14 → 2026-12-21 (+7d) |  | none → -94d | resources none → physical units [509.17 h] |
| 3 | **Distribution Pillar Works** | 2026-11-18 → 2026-11-25 (+7d) | 2027-01-11 → 2027-01-18 (+7d) |  |  |  |
| PRO-LV-DP-MF-100 | Manufacturing of Distribution Pillars for Low Voltage Network | 2026-11-18 → 2026-11-25 (+7d) | 2027-01-03 → 2027-01-10 (+7d) |  | none → -101d | resources none → physical units [678.89 h] |
| PRO-LV-DP-MF-110 | Manufacturing of Low Voltage Earthing for Low Voltage Network | 2026-11-26 → 2026-12-03 (+7d) | 2027-01-11 → 2027-01-18 (+7d) |  | none → -108d | resources none → physical units [678.89 h] |
| 4 | **Termination and Testing Works** | 2026-12-05 → 2026-12-12 (+7d) | 2027-02-23 → 2027-03-02 (+7d) |  |  |  |
| PRO-LV-TT-MF-100 | Manufacturing of Cable Lugs for Low Voltage Network | 2026-12-05 → 2026-12-12 (+7d) | 2027-02-23 → 2027-03-02 (+7d) |  | none → -115d | resources none → physical units [1188.06 h] |
| 1DL | **1st Delivery of Material to Site** | 2026-12-15 → 2026-12-22 (+7d) | 2027-02-24 → 2027-03-03 (+7d) |  |  |  |
| 1 | **Main Low Voltage Cables Works** | 2026-12-15 → 2026-12-22 (+7d) | 2027-01-23 → 2027-01-30 (+7d) |  |  |  |
| PRO-LV-ML-1DL-100 | 1ST Material Delivery for Main Low Voltage Cables of Low Voltage Network | 2026-12-15 → 2026-12-22 (+7d) | 2027-01-23 → 2027-01-30 (+7d) |  | none → -116d | resources none → physical units [577.06 h] |
| 2 | **Service Low Voltage Cables Works** | 2027-01-24 → 2027-01-31 (+7d) | 2027-01-31 → 2027-02-07 (+7d) |  |  |  |
| PRO-LV-HC-1DL-100 | 1ST Material Delivery for Service Low Voltage Cables of Low Voltage Network | 2027-01-24 → 2027-01-31 (+7d) | 2027-01-31 → 2027-02-07 (+7d) |  | none → -116d | resources none → physical units [118.81 h] |
| 3 | **Distribution Pillar Works** | 2027-02-01 → 2027-02-08 (+7d) | 2027-02-16 → 2027-02-23 (+7d) |  |  |  |
| PRO-LV-DP-1DL-100 | 1ST Material Delivery for Distribution Pillars of Low Voltage Network | 2027-02-01 → 2027-02-08 (+7d) | 2027-02-08 → 2027-02-15 (+7d) |  | none → -116d | resources none → physical units [118.81 h] |
| PRO-LV-DP-1DL-110 | 1ST Material Delivery for Low Voltage Earthing of Low Voltage Network | 2027-02-09 → 2027-02-16 (+7d) | 2027-02-16 → 2027-02-23 (+7d) |  | none → -116d | resources none → physical units [118.81 h] |
| 4 | **Termination and Testing Works** | 2027-02-17 → 2027-02-24 (+7d) | 2027-02-24 → 2027-03-03 (+7d) |  |  |  |
| PRO-LV-TT-1DL-100 | 1ST Material Delivery for Cable Lugs of Low Voltage Network | 2027-02-17 → 2027-02-24 (+7d) | 2027-02-24 → 2027-03-03 (+7d) |  | none → -116d | resources none → physical units [118.81 h] |
| DL | **Delivery of Material to Site** | 2027-01-24 → 2027-01-31 (+7d) | 2027-04-12 → 2027-04-19 (+7d) |  |  |  |
| 1 | **Main Low Voltage Cables Works** | 2027-01-24 → 2027-01-31 (+7d) | 2027-01-31 → 2027-02-07 (+7d) |  |  |  |
| PRO-LV-ML-DL-100 | Material Delivery of Main Low Voltage Cables for Low Voltage Network | 2027-01-24 → 2027-01-31 (+7d) | 2027-01-31 → 2027-02-07 (+7d) |  | none → -108d | resources Road crossing ducts, 2 ways (2 x 150mm HDPE); Road crossing ducts, 2 ways (2 x 110mm UPVC); Road crossing ducts, 3 ways (3 x 110mm UPVC); 4C-300mm2 CU/XLPE / PVC ARMORED CABLE; 4C-240mm2 CU/XLPE / PVC ARMORED CABLE; 4C-185mm2 CU/XLPE / PVC ARMORED CABLE; 4C-50mm2 CU/XLPE / PVC ARMORED CABLE; 4C-16mm2 CU/XLPE / PVC ARMORED CABLE; 4C-16MM2 CU/XLPE / PVC CABLE; 1Cx150sq.mm2,Cu, PVC wire; 1Cx120sq.mm2,Cu, PVC wire; 1Cx95sq.mm,Cu, PVC wire; 1Cx70sq.mm2,Cu, PVC wire; 1Cx25sq.mm2,Cu, PVC wire; 1Cx16sq.mm2,Cu, PVC wire; 1Cx10sq.mm2,Cu, PVC wire → Road crossing ducts, 2 ways (2 x 150mm HDPE); Road crossing ducts, 2 ways (2 x 110mm UPVC); Road crossing ducts, 3 ways (3 x 110mm UPVC); 4C-300mm2 CU/XLPE / PVC ARMORED CABLE; 4C-240mm2 CU/XLPE / PVC ARMORED CABLE; 4C-185mm2 CU/XLPE / PVC ARMORED CABLE; 4C-50mm2 CU/XLPE / PVC ARMORED CABLE; 4C-16mm2 CU/XLPE / PVC ARMORED CABLE; 4C-16MM2 CU/XLPE / PVC CABLE; 1Cx150sq.mm2,Cu, PVC wire; 1Cx120sq.mm2,Cu, PVC wire; 1Cx95sq.mm,Cu, PVC wire; 1Cx70sq.mm2,Cu, PVC wire; 1Cx25sq.mm2,Cu, PVC wire; 1Cx16sq.mm2,Cu, PVC wire; 1Cx10sq.mm2,Cu, PVC wire; physical units [118.81 h] |
| 2 | **Service Low Voltage Cables Works** | 2027-02-01 → 2027-02-08 (+7d) | 2027-02-24 → 2027-03-03 (+7d) |  |  |  |
| PRO-LV-HC-DL-100 | Material Delivery of Service Low Voltage Cables for Low Voltage Network | 2027-02-01 → 2027-02-08 (+7d) | 2027-02-24 → 2027-03-03 (+7d) |  | none → -108d | resources Road crossing ducts, 2 ways (2 x 150mm HDPE); Road crossing ducts, 2 ways (2 x 110mm UPVC); Road crossing ducts, 3 ways (3 x 110mm UPVC); 4C-300mm2 CU/XLPE / PVC ARMORED CABLE; 4C-240mm2 CU/XLPE / PVC ARMORED CABLE; 4C-185mm2 CU/XLPE / PVC ARMORED CABLE; 4C-50mm2 CU/XLPE / PVC ARMORED CABLE; 4C-16mm2 CU/XLPE / PVC ARMORED CABLE; 4C-16MM2 CU/XLPE / PVC CABLE; 1Cx150sq.mm2,Cu, PVC wire; 1Cx120sq.mm2,Cu, PVC wire; 1Cx95sq.mm,Cu, PVC wire; 1Cx70sq.mm2,Cu, PVC wire; 1Cx25sq.mm2,Cu, PVC wire; 1Cx16sq.mm2,Cu, PVC wire; 1Cx10sq.mm2,Cu, PVC wire → Road crossing ducts, 2 ways (2 x 150mm HDPE); Road crossing ducts, 2 ways (2 x 110mm UPVC); Road crossing ducts, 3 ways (3 x 110mm UPVC); 4C-300mm2 CU/XLPE / PVC ARMORED CABLE; 4C-240mm2 CU/XLPE / PVC ARMORED CABLE; 4C-185mm2 CU/XLPE / PVC ARMORED CABLE; 4C-50mm2 CU/XLPE / PVC ARMORED CABLE; 4C-16mm2 CU/XLPE / PVC ARMORED CABLE; 4C-16MM2 CU/XLPE / PVC CABLE; 1Cx150sq.mm2,Cu, PVC wire; 1Cx120sq.mm2,Cu, PVC wire; 1Cx95sq.mm,Cu, PVC wire; 1Cx70sq.mm2,Cu, PVC wire; 1Cx25sq.mm2,Cu, PVC wire; 1Cx16sq.mm2,Cu, PVC wire; 1Cx10sq.mm2,Cu, PVC wire; physical units [356.42 h] |
| 3 | **Distribution Pillar Works** | 2027-02-24 → 2027-03-03 (+7d) | 2027-03-22 → 2027-03-29 (+7d) |  |  |  |
| PRO-LV-DP-DL-120 | Material Delivery of Low Voltage Earthing for Low Voltage Network | 2027-02-24 → 2027-03-03 (+7d) | 2027-03-22 → 2027-03-29 (+7d) |  | none → -108d | resources Road crossing ducts, 2 ways (2 x 150mm HDPE); Road crossing ducts, 2 ways (2 x 110mm UPVC); Road crossing ducts, 3 ways (3 x 110mm UPVC); 4C-300mm2 CU/XLPE / PVC ARMORED CABLE; 4C-240mm2 CU/XLPE / PVC ARMORED CABLE; 4C-185mm2 CU/XLPE / PVC ARMORED CABLE; 4C-50mm2 CU/XLPE / PVC ARMORED CABLE; 4C-16mm2 CU/XLPE / PVC ARMORED CABLE; 4C-16MM2 CU/XLPE / PVC CABLE; 1Cx150sq.mm2,Cu, PVC wire; 1Cx120sq.mm2,Cu, PVC wire; 1Cx95sq.mm,Cu, PVC wire; 1Cx70sq.mm2,Cu, PVC wire; 1Cx25sq.mm2,Cu, PVC wire; 1Cx16sq.mm2,Cu, PVC wire; 1Cx10sq.mm2,Cu, PVC wire → Road crossing ducts, 2 ways (2 x 150mm HDPE); Road crossing ducts, 2 ways (2 x 110mm UPVC); Road crossing ducts, 3 ways (3 x 110mm UPVC); 4C-300mm2 CU/XLPE / PVC ARMORED CABLE; 4C-240mm2 CU/XLPE / PVC ARMORED CABLE; 4C-185mm2 CU/XLPE / PVC ARMORED CABLE; 4C-50mm2 CU/XLPE / PVC ARMORED CABLE; 4C-16mm2 CU/XLPE / PVC ARMORED CABLE; 4C-16MM2 CU/XLPE / PVC CABLE; 1Cx150sq.mm2,Cu, PVC wire; 1Cx120sq.mm2,Cu, PVC wire; 1Cx95sq.mm,Cu, PVC wire; 1Cx70sq.mm2,Cu, PVC wire; 1Cx25sq.mm2,Cu, PVC wire; 1Cx16sq.mm2,Cu, PVC wire; 1Cx10sq.mm2,Cu, PVC wire; physical units [339.45 h] |
| PRO-LV-DP-DL-100 | Material Delivery of Distribution Pillars for Low Voltage Network | 2027-02-25 → 2027-03-04 (+7d) | 2027-03-22 → 2027-03-29 (+7d) |  | none → -108d | resources Supply and installation of KWH meter mounting frame including concrete block for installation of KWH meter according to the standards and specifications of SEC. → Supply and installation of KWH meter mounting frame including concrete block for installation of KWH meter according to the standards and specifications of SEC.; physical units [322.47 h] |
| 4 | **Termination and Testing Works** | 2027-03-23 → 2027-03-30 (+7d) | 2027-04-12 → 2027-04-19 (+7d) |  |  |  |
| PRO-LV-TT-DL-100 | Material Delivery of Cable Lugs for Low Voltage Network | 2027-03-23 → 2027-03-30 (+7d) | 2027-04-12 → 2027-04-19 (+7d) |  | none → -85d | resources Road crossing ducts, 2 ways (2 x 150mm HDPE); Road crossing ducts, 2 ways (2 x 110mm UPVC); Road crossing ducts, 3 ways (3 x 110mm UPVC); 4C-300mm2 CU/XLPE / PVC ARMORED CABLE; 4C-240mm2 CU/XLPE / PVC ARMORED CABLE; 4C-185mm2 CU/XLPE / PVC ARMORED CABLE; 4C-50mm2 CU/XLPE / PVC ARMORED CABLE; 4C-16mm2 CU/XLPE / PVC ARMORED CABLE; 4C-16MM2 CU/XLPE / PVC CABLE; 1Cx150sq.mm2,Cu, PVC wire; 1Cx120sq.mm2,Cu, PVC wire; 1Cx95sq.mm,Cu, PVC wire; 1Cx70sq.mm2,Cu, PVC wire; 1Cx25sq.mm2,Cu, PVC wire; 1Cx16sq.mm2,Cu, PVC wire; 1Cx10sq.mm2,Cu, PVC wire → Road crossing ducts, 2 ways (2 x 150mm HDPE); Road crossing ducts, 2 ways (2 x 110mm UPVC); Road crossing ducts, 3 ways (3 x 110mm UPVC); 4C-300mm2 CU/XLPE / PVC ARMORED CABLE; 4C-240mm2 CU/XLPE / PVC ARMORED CABLE; 4C-185mm2 CU/XLPE / PVC ARMORED CABLE; 4C-50mm2 CU/XLPE / PVC ARMORED CABLE; 4C-16mm2 CU/XLPE / PVC ARMORED CABLE; 4C-16MM2 CU/XLPE / PVC CABLE; 1Cx150sq.mm2,Cu, PVC wire; 1Cx120sq.mm2,Cu, PVC wire; 1Cx95sq.mm,Cu, PVC wire; 1Cx70sq.mm2,Cu, PVC wire; 1Cx25sq.mm2,Cu, PVC wire; 1Cx16sq.mm2,Cu, PVC wire; 1Cx10sq.mm2,Cu, PVC wire; physical units [305.5 h] |
| SL | **Street Lighting Network** | 2026-11-26 → 2026-08-01 (-117d) | 2027-04-29 → 2027-05-03 (+4d) |  |  |  |
| PO | **Issuance of Purchase Orders** | 2026-11-26 → 2026-08-01 (-117d) | 2026-12-15 → 2026-08-04 (-133d) |  |  |  |
| 1 | **Cabling Works** | 2026-11-26 → 2026-08-01 (-117d) | 2026-12-01 → 2026-08-04 (-119d) |  |  |  |
| PRO-SL-PO-100 | Issuance of Purchase Order for Lighting Cables of Street Lighting Network | 2026-11-26 → 2026-08-01 A (-117d) | 2026-12-01 → 2026-08-04 A (-119d) | 0% → 100% |  | resources none → physical units [84.86 h] |
| 2 | **Lighting Poles Works** | 2026-11-26 → 2026-08-01 (-117d) | 2026-12-01 → 2026-08-04 (-119d) |  |  |  |
| PRO-SL-PO-110 | Issuance of Purchase Order for Lighting Poles Foundations of Street Lighting Network | 2026-11-26 → 2026-08-01 A (-117d) | 2026-12-01 → 2026-08-04 A (-119d) | 0% → 100% |  | resources none → physical units [84.86 h] |
| PRO-SL-PO-120 | Issuance of Purchase Order for Lighting Poles of Street Lighting Network | 2026-11-26 → 2026-08-01 A (-117d) | 2026-12-01 → 2026-08-04 A (-119d) | 0% → 100% |  | resources none → physical units [84.86 h] |
| PRO-SL-PO-140 | Issuance of Purchase Order for Lighting Fixtures of Street Lighting Network | 2026-11-26 → 2026-08-01 A (-117d) | 2026-12-01 → 2026-08-04 A (-119d) | 0% → 100% |  | resources none → physical units [84.86 h] |
| 3 | **Distribution Panel Board** | 2026-11-26 → 2026-08-01 (-117d) | 2026-12-02 → 2026-08-04 (-120d) |  |  |  |
| PRO-SL-PO-160 | Issuance of Purchase Order for Distrubution Panel Boards of Street Lighting Network | 2026-11-26 → 2026-08-01 A (-117d) | 2026-12-02 → 2026-08-04 A (-120d) | 0% → 100% |  | resources none → physical units [101.83 h] |
| 4 | **Earthing System Works** | 2026-12-09 → 2026-08-01 (-130d) | 2026-12-15 → 2026-08-04 (-133d) |  |  |  |
| PRO-SL-PO-150 | Issuance of Purchase Order for Lighting Earthing of Street Lighting Network | 2026-12-09 → 2026-08-01 A (-130d) | 2026-12-15 → 2026-08-04 A (-133d) | 0% → 100% |  | resources none → physical units [101.83 h] |
| 5 | **Termination and Testing Works** | 2026-12-02 → 2026-08-01 (-123d) | 2026-12-09 → 2026-08-04 (-127d) |  |  |  |
| PRO-SL-PO-130 | Issuance of Purchase Order for Fuse Boxes of Street Lighting Network | 2026-12-03 → 2026-08-01 A (-124d) | 2026-12-09 → 2026-08-04 A (-127d) | 0% → 100% |  | resources none → physical units [101.83 h] |
| PRO-SL-PO-170 | Issuance of Purchase Order for Cable Lugs of Street Lighting Network | 2026-12-02 → 2026-08-01 A (-123d) | 2026-12-08 → 2026-08-04 A (-126d) | 0% → 100% |  | resources none → physical units [101.83 h] |
| MF | **Manufacturing of Material** |  | 2027-03-29 → 2027-03-21 (-8d) |  |  |  |
| PRO-SL-MF-100 | Manufacturing of Lighting Cables for Street Lighting Network |  |  |  | none → -104d | resources none → physical units [339.45 h] |
| PRO-SL-MF-110 | Manufacturing of Lighting Poles Foundations for Street Lighting Network |  |  |  | none → -104d | resources none → physical units [356.42 h] |
| PRO-SL-MF-120 | Manufacturing of Lighting Poles for Street Lighting Network |  |  |  | none → -98d | resources none → physical units [356.42 h] |
| PRO-SL-MF-140 | Manufacturing of Lighting Fixtures for Street Lighting Network |  |  |  | none → -98d | resources none → physical units [356.42 h] |
| PRO-SL-MF-160 | Manufacturing of Distrubution Panel Boards for Street Lighting Network |  |  |  | none → -98d | resources none → physical units [509.17 h] |
| 4 | **Earthing System Works** | 2026-12-16 → 2026-12-02 (-14d) | 2027-01-31 → 2027-01-17 (-14d) |  |  |  |
| PRO-SL-MF-150 | Manufacturing of Lighting Earthing for Street Lighting Network | 2026-12-16 → 2026-12-02 (-14d) | 2027-01-31 → 2027-01-17 (-14d) |  | none → -88d | resources none → physical units [678.89 h] |
| 5 | **Termination and Testing Works** | 2026-12-10 → 2026-12-02 (-8d) | 2027-03-29 → 2027-03-21 (-8d) |  |  |  |
| PRO-SL-MF-130 | Manufacturing of Fuse Boxes for Street Lighting Network | 2026-12-10 → 2026-12-02 (-8d) | 2027-03-01 → 2027-02-21 (-8d) |  | none → -77d | resources none → physical units [1188.06 h] |
| PRO-SL-MF-170 | Manufacturing of Cable Lugs for Street Lighting Network | 2027-03-02 → 2027-02-22 (-8d) | 2027-03-29 → 2027-03-21 (-8d) |  | none → -77d | resources none → physical units [356.42 h] |
| 1DL | **1st Material Delivery & Site Inspection** |  | 2027-04-12 → 2027-04-04 (-8d) |  |  |  |
| PRO-SL-1DL-100 | 1ST Material Delivery for Lighting Cables of Street Lighting Network |  |  |  | none → -89d | resources none → physical units [101.83 h] |

| ID | Task | Start | Finish | Complete | Total float | Other |
| --- | --- | --- | --- | --- | --- | --- |
| PRO-SL-1DL-110 | 1ST Material Delivery for Lighting Poles Foundations of Street Lighting Network |  |  |  | none → -104d | resources none → physical units [101.83 h] |
| PRO-SL-1DL-120 | 1ST Material Delivery for Lighting Poles of Street Lighting Network |  |  |  | none → -101d | resources none → physical units [101.83 h] |
| PRO-SL-1DL-140 | 1ST Material Delivery for Lighting Fixtures of Street Lighting Network |  |  |  | none → -101d | resources none → physical units [101.83 h] |
| PRO-SL-1DL-160 | 1ST Material Delivery for Distrubution Panel Boards of Street Lighting Network |  |  |  | none → -98d | resources none → physical units [101.83 h] |
| 5 | **Termination and Testing Works** |  | 2027-04-05 → 2027-03-28 (-8d) |  |  |  |
| PRO-SL-1DL-130 | 1ST Material Delivery for Fuse Boxes of Street Lighting Network |  |  |  | none → -83d | resources none → physical units [101.83 h] |
| PRO-SL-1DL-170 | 1ST Material Delivery for Cable Lugs of Street Lighting Network | 2027-03-30 → 2027-03-22 (-8d) | 2027-04-05 → 2027-03-28 (-8d) |  | none → -77d | resources none → physical units [101.83 h] |
| 4 | **Earthing System Works** | 2027-04-06 → 2027-03-29 (-8d) | 2027-04-12 → 2027-04-04 (-8d) |  |  |  |
| PRO-SL-1DL-150 | 1ST Material Delivery for Lighting Earthing of Street Lighting Network | 2027-04-06 → 2027-03-29 (-8d) | 2027-04-12 → 2027-04-04 (-8d) |  | none → -77d | resources none → physical units [101.83 h] |
| DL | **Material Delivery & Site Inspection** |  | 2027-04-29 → 2027-05-03 (+4d) |  |  |  |
| PRO-R25-SL-DL-100 | Material Delivery & Site Inspection of Lighting Cables for Street Lighting Network |  |  |  | none → -89d | resources Lighting poles with 1 arm, height of (12) meters, including the power distribution box, cables, and RCC foundation.; Lighting poles with 2 arms, height of (12) meters, including the power distribution box, cables, and RCC foundation. → Lighting poles with 1 arm, height of (12) meters, including the power distribution box, cables, and RCC foundation.; Lighting poles with 2 arms, height of (12) meters, including the power distribution box, cables, and RCC foundation.; physical units [356.42 h] |
| PRO-R25-SL-DL-110 | Material Delivery & Site Inspection of Lighting Poles Foundations for Street Lighting Network |  |  |  | none → -104d | resources Lighting poles with 1 arm, height of (12) meters, including the power distribution box, cables, and RCC foundation.; Lighting poles with 2 arms, height of (12) meters, including the power distribution box, cables, and RCC foundation. → Lighting poles with 1 arm, height of (12) meters, including the power distribution box, cables, and RCC foundation.; Lighting poles with 2 arms, height of (12) meters, including the power distribution box, cables, and RCC foundation.; physical units [356.42 h] |
| PRO-R25-SL-DL-120 | Material Delivery & Site Inspection of Lighting Poles for Street Lighting Network |  |  |  | none → -104d | resources Lighting poles with 1 arm, height of (12) meters, including the power distribution box, cables, and RCC foundation.; Lighting poles with 2 arms, height of (12) meters, including the power distribution box, cables, and RCC foundation. → Lighting poles with 1 arm, height of (12) meters, including the power distribution box, cables, and RCC foundation.; Lighting poles with 2 arms, height of (12) meters, including the power distribution box, cables, and RCC foundation.; physical units [356.42 h] |
| PRO-R25-SL-DL-140 | Material Delivery & Site Inspection of Lighting Fixtures for Street Lighting Network |  |  |  | none → -104d | resources Street Lighting( LED) Luminaire of Output ? 20,965 lumen complete with control gear and lamp, (129.1) WATT. → Street Lighting( LED) Luminaire of Output ? 20,965 lumen complete with control gear and lamp, (129.1) WATT.; physical units [356.42 h] |
| 3 | **Distribution Panel Board** | 2027-03-13 → 2027-03-16 (+3d) | 2027-04-05 → 2027-04-08 (+3d) |  |  |  |
| PRO-R25-SL-DL-160 | Material Delivery & Site Inspection of Distrubution Panel Boards for Street Lighting Network | 2027-03-13 → 2027-03-16 (+3d) | 2027-04-05 → 2027-04-08 (+3d) |  | none → -107d | resources Street Lighting panels LCP (01) → Street Lighting panels LCP (01); physical units [356.42 h] |
| 4 | **Termination and Testing Works** | 2027-04-06 → 2027-04-10 (+4d) | 2027-04-29 → 2027-05-03 (+4d) |  |  |  |
| PRO-R25-SL-DL-130 | Material Delivery & Site Inspection of Fuse Boxes for Street Lighting Network | 2027-04-06 → 2027-04-10 (+4d) | 2027-04-29 → 2027-05-03 (+4d) |  | none → -107d | resources Lighting poles with 1 arm, height of (12) meters, including the power distribution box, cables, and RCC foundation.; Lighting poles with 2 arms, height of (12) meters, including the power distribution box, cables, and RCC foundation. → Lighting poles with 1 arm, height of (12) meters, including the power distribution box, cables, and RCC foundation.; Lighting poles with 2 arms, height of (12) meters, including the power distribution box, cables, and RCC foundation.; physical units [356.42 h] |
| PRO-R25-SL-DL-170 | Material Delivery & Site Inspection of Cable Lugs for Street Lighting Network | 2027-04-06 → 2027-04-10 (+4d) | 2027-04-29 → 2027-05-03 (+4d) |  | none → -87d | resources Lighting poles with 1 arm, height of (12) meters, including the power distribution box, cables, and RCC foundation.; Lighting poles with 2 arms, height of (12) meters, including the power distribution box, cables, and RCC foundation. → Lighting poles with 1 arm, height of (12) meters, including the power distribution box, cables, and RCC foundation.; Lighting poles with 2 arms, height of (12) meters, including the power distribution box, cables, and RCC foundation.; physical units [356.42 h] |
| 5 | **Earthing System Works** | 2027-04-06 → 2027-04-10 (+4d) | 2027-04-29 → 2027-05-03 (+4d) |  |  |  |
| PRO-R25-SL-DL-150 | Material Delivery & Site Inspection of Lighting Earthing for Street Lighting Network | 2027-04-06 → 2027-04-10 (+4d) | 2027-04-29 → 2027-05-03 (+4d) |  | none → -87d | resources Including earthing of lighting poles, masts, feeder pillars, unit substations and LV feeders. → Including earthing of lighting poles, masts, feeder pillars, unit substations and LV feeders.; physical units [356.42 h] |
| TE | **Telecom and Light Current Network** | 2026-12-09 → 2026-12-02 (-7d) | 2027-03-30 → 2027-03-23 (-7d) |  |  |  |
| PO | **Issuance of Purchase Orders** | 2026-12-09 → 2026-12-02 (-7d) | 2026-12-31 → 2026-12-24 (-7d) |  |  |  |
| 1 | **Ducts Works** | 2026-12-09 → 2026-12-02 (-7d) | 2026-12-16 → 2026-12-09 (-7d) |  |  |  |
| PRO-TE-PO-100 | Issuance of Purchase Order for Ducts forTelecom Network | 2026-12-09 → 2026-12-02 (-7d) | 2026-12-16 → 2026-12-09 (-7d) |  | none → -83d | resources none → physical units [118.81 h] |
| 3 | **Manholes Works** | 2026-12-09 → 2026-12-02 (-7d) | 2026-12-16 → 2026-12-09 (-7d) |  |  |  |
| PRO-TE-PO-110 | Issuance of Purchase Order for Manholes forTelecom Network | 2026-12-09 → 2026-12-02 (-7d) | 2026-12-16 → 2026-12-09 (-7d) |  | none → -83d | resources none → physical units [118.81 h] |
| 2 | **CCTV, Telephone, MSN, ACs System Works** | 2026-12-09 → 2026-12-02 (-7d) | 2026-12-31 → 2026-12-24 (-7d) |  |  |  |
| PRO-CTV-PO-100 | Issuance of Purchase Order for Civil and Finishes Works of CCTV Complete System | 2026-12-09 → 2026-12-02 (-7d) | 2026-12-31 → 2026-12-24 (-7d) |  | none → -83d | resources none → physical units [339.45 h] |
| MF | **Manufacturing of Material** | 2026-12-17 → 2026-12-10 (-7d) | 2027-03-08 → 2027-03-01 (-7d) |  |  |  |
| 1 | **Ducts Works** | 2026-12-17 → 2026-12-10 (-7d) | 2027-01-09 → 2027-01-02 (-7d) |  |  |  |
| PRO-TE-MF-100 | Manufacturing of Ducts for Telecom Network | 2026-12-17 → 2026-12-10 (-7d) | 2027-01-09 → 2027-01-02 (-7d) |  | none → -75d | resources none → physical units [339.45 h] |
| 3 | **Manholes Works** | 2027-01-10 → 2027-01-03 (-7d) | 2027-02-01 → 2027-01-25 (-7d) |  |  |  |
| PRO-TE-MF-110 | Manufacturing of Manholes for Telecom Network | 2027-01-10 → 2027-01-03 (-7d) | 2027-02-01 → 2027-01-25 (-7d) |  | none → -75d | resources none → physical units [339.45 h] |
| 2 | **CCTV, Telephone, MSN, ACs System Works** | 2027-02-02 → 2027-01-26 (-7d) | 2027-03-08 → 2027-03-01 (-7d) |  |  |  |
| PRO-CTV-MF-100 | Manufacturing of Civil and Finishes Works for CCTV Complete System | 2027-02-02 → 2027-01-26 (-7d) | 2027-03-08 → 2027-03-01 (-7d) |  | none → -60d | resources none → physical units [509.17 h] |
| 1DL | **1st Material Delivery & Site Inspection** | 2027-01-10 → 2027-01-03 (-7d) | 2027-03-18 → 2027-03-08 (-10d) |  |  |  |
| 1 | **Ducts Works** | 2027-01-10 → 2027-01-03 (-7d) | 2027-01-16 → 2027-01-09 (-7d) |  |  |  |
| PRO-TE-1DL-100 | 1ST Material Delivery for Ducts of Telecom Network | 2027-01-10 → 2027-01-03 (-7d) | 2027-01-16 → 2027-01-09 (-7d) |  | none → -67d | resources none → physical units [101.83 h] |
| 3 | **Manholes Works** | 2027-02-02 → 2027-01-26 (-7d) | 2027-02-08 → 2027-02-01 (-7d) |  |  |  |
| PRO-TE-1DL-110 | 1ST Material Delivery for Manholes of Telecom Network | 2027-02-02 → 2027-01-26 (-7d) | 2027-02-08 → 2027-02-01 (-7d) |  | none → -75d | resources none → physical units [101.83 h] |
| 2 | **CCTV, Telephone, MSN, ACs System Works** | 2027-03-13 → 2027-03-02 (-11d) | 2027-03-18 → 2027-03-08 (-10d) |  |  |  |
| PRO-CTV-1DL-100 | 1ST Material Delivery for Civil and Finishes Works of CCTV Complete System | 2027-03-13 → 2027-03-02 (-11d) | 2027-03-18 → 2027-03-08 (-10d) |  | none → -60d | resources none → physical units [101.83 h] |
| DL | **Material Delivery & Site Inspection** | 2027-01-17 → 2027-01-10 (-7d) | 2027-03-30 → 2027-03-23 (-7d) |  |  |  |
| 1 | **Ducts Works** | 2027-01-17 → 2027-01-10 (-7d) | 2027-02-02 → 2027-01-26 (-7d) |  |  |  |
| PRO-R25-TE-DL-100 | Material Delivery & Site Inspection for Ducts of Telecom Network | 2027-01-17 → 2027-01-10 (-7d) | 2027-02-02 → 2027-01-26 (-7d) |  | none → -67d | resources 2-ways ducts, 32mm diameter; 2x3-ways ducts, 50mm diameter; 8-ways ducts, 6 x 160mm & 2 x 100mm; 2 PVC ducts 150x200 mm (60mm diameter); 4 PVC ducts 600x150 mm (60mm diameter); 8 PVC ducts 1000x300 mm (60mm diameter); 6 PVC ducts 600x800 mm (60mm diameter) → 2-ways ducts, 32mm diameter; 2x3-ways ducts, 50mm diameter; 8-ways ducts, 6 x 160mm & 2 x 100mm; 2 PVC ducts 150x200 mm (60mm diameter); 4 PVC ducts 600x150 mm (60mm diameter); 8 PVC ducts 1000x300 mm (60mm diameter); 6 PVC ducts 600x800 mm (60mm diameter); physical units [254.58 h] |
| 3 | **Manholes Works** | 2027-02-09 → 2027-02-02 (-7d) | 2027-02-25 → 2027-02-18 (-7d) |  |  |  |
| PRO-R25-TE-DL-110 | Material Delivery & Site Inspection of Manholes for Telecom Network | 2027-02-09 → 2027-02-02 (-7d) | 2027-02-25 → 2027-02-18 (-7d) |  | none → -72d | resources Manhole Type 2 (1600 x 1600 x 2000); Manhole Type 3 (1200 x 1200 x 2000); Manhole Type 1 (800 x 600 x 1200) → Manhole Type 2 (1600 x 1600 x 2000); Manhole Type 3 (1200 x 1200 x 2000); Manhole Type 1 (800 x 600 x 1200); physical units [254.58 h] |
| 2 | **CCTV, Telephone, MSN, ACs System Works** | 2027-03-20 → 2027-03-13 (-7d) | 2027-03-30 → 2027-03-23 (-7d) |  |  |  |
| PRO-R25-CTV-DL-100 | Material Delivery & Site Inspection of for Civil and Finishes Works of CCTV Complete System | 2027-03-20 → 2027-03-13 (-7d) | 2027-03-30 → 2027-03-23 (-7d) |  | none → -60d | resources NVR Server with RAID (5, 6 or 10) to record all cameras storage 80TB with all hardware / software / licenses etc.; VMS Server with RAID (5, 6 or 10) complete Hardware / Software with one Color Laser Printer and all associated accessories for central management.; Licenses for Cameras, Workstations and Keyboards; Work Station (MMI with two monitors each, for Monitoring for CCTV & ACS); Keyboard with joystick for CCTV with all accessories as per specification; Pole mounted IP( PoE) Fixed camera, 5MP,IP 66, IR illumination, 3-8mm varifocal, auto iris lens type; Wall mounted IP( PoE) Fixed camera, 5MP,IP 66, IR illumination, 3-8mm varifocal, auto iris lens type; 5MP Dome camera ceiling Mounted IP (PoE) indoor; 5MP PTZ Multi Sensor Camera IP(PoE) 360 Degree View Outdoor with accessories (IP 66); 8 Port Industrial PoE Switch 10/100BaseT (0 deg to +70 deg. Celsius); Filed Equipment cabinet (FEC), with fan and ventilation, NEMEX 4X ,door, minimum size (600x600x400mm), the cabinet/enclosure includes industrial switch and UPS.; IP Phone Communication server (hot standby) 50 Port equipped, Gateway, Gatekeeper, H.323, SIP, redundant Power etc.; IP Phone Voice gateway; Voice IP Phone; NMS Server for IP phone and NETWORK Elements; NMS Workstation; Firm Ware, software & licenses; Data Cable; Power Cable; Layer 3, 24 Port non-PoE switch10/1000BaseT/LX (-40 deg to +70 deg. Celsius), stack module and associated accessories for utility Telecom Server room; Layer 2, 24 Port non-PoE switch10/1000BaseT (-40 deg to +70 deg. Celsius), stack module and associated accessories for utility Telecom Server and Security Guard house room; Network Management System Server; Network Management System workstation; 42U rack dimension (W x H x L) 800 x 2000 x 1000 mm; 12U rack dimension (W x H x L) 600 x 625 x 600 mm; 06C Optical Fiber SM; 48C Optical Fiber SM; 48 Core Splice Closure; Optical fiber patch cord 5m; Data Cable (STP CAT 6A); 3C Power Cable armored 1.5mm2; 3C Power Cable armored 2.5 mm2; UTP CAT6A Patch Cord 1m/3m/5m; Access Control Unit; Access Card Reader; Magnetic Lock; Break Glass; Exit Push button; Door Sensor; Biometrics Reader; Smart Card Printer; Card Issue Work Station; Photographic Camera with stand; Interface modules with CCTV, Fire and other systems; 1-ways ducts, 6 x 50mm diameter; 6 PVC ducts 150x200 mm (60mm diameter) → NVR Server with RAID (5, 6 or 10) to record all cameras storage 80TB with all hardware / software / licenses etc.; VMS Server with RAID (5, 6 or 10) complete Hardware / Software with one Color Laser Printer and all associated accessories for central management.; Licenses for Cameras, Workstations and Keyboards; Work Station (MMI with two monitors each, for Monitoring for CCTV & ACS); Keyboard with joystick for CCTV with all accessories as per specification; Pole mounted IP( PoE) Fixed camera, 5MP,IP 66, IR illumination, 3-8mm varifocal, auto iris lens type; Wall mounted IP( PoE) Fixed camera, 5MP,IP 66, IR illumination, 3-8mm varifocal, auto iris lens type; 5MP Dome camera ceiling Mounted IP (PoE) indoor; 5MP PTZ Multi Sensor Camera IP(PoE) 360 Degree View Outdoor with accessories (IP 66); 8 Port Industrial PoE Switch 10/100BaseT (0 deg to +70 deg. Celsius); Filed Equipment cabinet (FEC), with fan and ventilation, NEMEX 4X ,door, minimum size (600x600x400mm), the cabinet/enclosure includes industrial switch and UPS.; IP Phone Communication server (hot standby) 50 Port equipped, Gateway, Gatekeeper, H.323, SIP, redundant Power etc.; IP Phone Voice gateway; Voice IP Phone; NMS Server for IP phone and NETWORK Elements; NMS Workstation; Firm Ware, software & licenses; Data Cable; Power Cable; Layer 3, 24 Port non-PoE switch10/1000BaseT/LX (-40 deg to +70 deg. Celsius), stack module and associated accessories for utility Telecom Server room; Layer 2, 24 Port non-PoE switch10/1000BaseT (-40 deg to +70 deg. Celsius), stack module and associated accessories for utility Telecom Server and Security Guard house room; Network Management System Server; Network Management System workstation; 42U rack dimension (W x H x L) 800 x 2000 x 1000 mm; 12U rack dimension (W x H x L) 600 x 625 x 600 mm; 06C Optical Fiber SM; 48C Optical Fiber SM; 48 Core Splice Closure; Optical fiber patch cord 5m; Data Cable (STP CAT 6A); 3C Power Cable armored 1.5mm2; 3C Power Cable armored 2.5 mm2; UTP CAT6A Patch Cord 1m/3m/5m; Access Control Unit; Access Card Reader; Magnetic Lock; Break Glass; Exit Push button; Door Sensor; Biometrics Reader; Smart Card Printer; Card Issue Work Station; Photographic Camera with stand; Interface modules with CCTV, Fire and other systems; 1-ways ducts, 6 x 50mm diameter; 6 PVC ducts 150x200 mm (60mm diameter); physical units [169.72 h] |
| RD | **Road Works** | 2026-11-02 → 2026-09-01 (-62d) | 2027-05-09 → 2027-05-20 (+11d) |  |  |  |
| PO | **Issuance of Purchase Orders** | 2026-11-02 → 2026-09-01 (-62d) | 2026-12-20 → 2026-12-10 (-10d) |  |  |  |
| 1 | **Road Works** | 2026-11-02 → 2026-09-01 (-62d) | 2026-12-20 → 2026-11-16 (-34d) |  |  |  |
| PRO-RD-PO-100 | Issuance of Purchase Order for Subgrade of Road Works | 2026-11-02 → 2026-09-01 A (-62d) | 2026-11-09 → 2026-09-03 A (-67d) | 0% → 100% |  | resources none → physical units [118.81 h] |
| PRO-RD-PO-110 | Issuance of Purchase Order for Aggregate Base Course of Road Works | 2026-11-10 → 2026-09-01 A (-70d) | 2026-11-17 → 2026-09-03 A (-75d) | 0% → 100% |  | resources none → physical units [118.81 h] |
| PRO-RD-PO-120 | Issuance of Purchase Order for Prime Coat of Road Works | 2026-11-18 → 2026-09-01 A (-78d) | 2026-11-25 → 2026-09-03 A (-83d) | 0% → 100% |  | resources none → physical units [118.81 h] |
| PRO-RD-PO-130 | Issuance of Purchase Order for Asphaltic Base Course Layer of Road Works | 2026-11-26 → 2026-09-01 A (-86d) | 2026-12-03 → 2026-09-03 A (-91d) | 0% → 100% |  | resources none → physical units [118.81 h] |
| PRO-RD-PO-180 | Issuance of Purchase Order for Asphaltic Wearing Course Layer for Roads Network | 2026-12-05 → 2026-09-01 A (-95d) | 2026-12-12 → 2026-09-03 A (-100d) | 0% → 100% |  | resources none → physical units [118.81 h] |
| PRO-RD-PO-190 | Issuance of Purchase Order for Tack Coat Layer for Roads Network | 2026-12-13 → 2026-11-09 (-34d) | 2026-12-20 → 2026-11-16 (-34d) |  | none → -58d | resources none → physical units [118.81 h] |
| 2 | **Pavement Works** | 2026-11-18 → 2026-11-09 (-9d) | 2026-12-03 → 2026-11-24 (-9d) |  |  |  |
| PRO-RD-PO-140 | Issuance of Purchase Order for Interlock Tiles of Landscaping | 2026-11-18 → 2026-11-09 (-9d) | 2026-11-25 → 2026-11-16 (-9d) |  | none → -67d | resources none → physical units [118.81 h] |
| PRO-RD-PO-150 | Issuance of Purchase Order for Curbstones of Landscaping | 2026-11-26 → 2026-11-17 (-9d) | 2026-12-03 → 2026-11-24 (-9d) |  | none → -67d | resources none → physical units [118.81 h] |
| 3 | **Traffic Signs Boards and Roads Marking** | 2026-12-05 → 2026-11-25 (-10d) | 2026-12-20 → 2026-12-10 (-10d) |  |  |  |
| PRO-RD-PO-160 | Issuance of Purchase Order for Traffic Signs Boards of Road Works | 2026-12-05 → 2026-11-25 (-10d) | 2026-12-12 → 2026-12-02 (-10d) |  | none → -67d | resources none → physical units [118.81 h] |
| PRO-RD-PO-170 | Issuance of Purchase Order for Road Markings of Road Works | 2026-12-13 → 2026-12-03 (-10d) | 2026-12-20 → 2026-12-10 (-10d) |  | none → -60d | resources none → physical units [118.81 h] |
| MF | **Manufacturing of Material** | 2026-11-10 → 2026-09-05 (-66d) | 2027-03-27 → 2027-03-17 (-10d) |  |  |  |
| 1 | **Road Works** | 2026-11-10 → 2026-09-05 (-66d) | 2027-02-22 → 2027-01-13 (-40d) |  |  |  |
| PRO-RD-MF-100 | Manufacturing of Subgrade for Road Works | 2026-11-10 → 2026-09-05 A (-66d) | 2026-11-21 → 2026-09-09 A (-73d) | 0% → 100% |  | resources none → physical units [169.72 h] |
| PRO-RD-MF-110 | Manufacturing of Aggregate Base Course for Road Works | 2026-11-22 → 2026-09-05 A (-78d) | 2026-12-14 → 2026-09-09 A (-96d) | 0% → 100% |  | resources none → physical units [339.45 h] |
| PRO-RD-MF-120 | Manufacturing of Prime Coat for Road Works | 2026-12-15 → 2026-09-05 A (-101d) | 2027-01-06 → 2026-09-09 A (-119d) | 0% → 100% |  | resources none → physical units [339.45 h] |

| ID | Task | Start | Finish | Complete | Total float | Other |
| --- | --- | --- | --- | --- | --- | --- |
| PRO-RD-MF-130 | Manufacturing of Asphaltic Base Course Layer for Road Works | 2027-01-07 → 2026-09-05 A (-124d) | 2027-01-30 → 2026-09-09 A (-143d) | 0% → 100% |  | resources none → physical units [339.45 h] |
| PRO-RD-MF-180 | Manufacturing of Asphaltic Wearing Course Layer for Roads Network | 2027-01-31 → 2026-09-05 A (-148d) | 2027-02-22 → 2026-09-09 A (-166d) | 0% → 100% |  | resources none → physical units [339.45 h] |
| PRO-RD-MF-190 | Manufacturing of Tack Coat Layer for Roads Network | 2026-12-21 → 2026-11-17 (-34d) | 2027-02-16 → 2027-01-13 (-34d) |  | none → -58d | resources none → physical units [848.62 h] |
| 2 | **Pavement Works** | 2027-02-17 → 2027-01-14 (-34d) | 2027-03-16 → 2027-02-07 (-37d) |  |  |  |
| PRO-RD-MF-140 | Manufacturing of Interlock Tiles for Landscaping | 2027-02-17 → 2027-01-14 (-34d) | 2027-03-16 → 2027-02-07 (-37d) |  | none → -58d | resources none → physical units [356.42 h] |
| PRO-RD-MF-150 | Manufacturing of Curbstones for Landscaping | 2027-02-17 → 2027-01-14 (-34d) | 2027-03-15 → 2027-02-06 (-37d) |  | none → -46d | resources none → physical units [339.45 h] |
| 3 | **Traffic Signs Boards and Roads Marking** | 2026-12-13 → 2026-12-03 (-10d) | 2027-03-27 → 2027-03-17 (-10d) |  |  |  |
| PRO-RD-MF-160 | Manufacturing of Traffic Signs Boards for Road Works | 2026-12-13 → 2026-12-03 (-10d) | 2027-03-18 → 2027-03-06 (-12d) |  | none → -67d | resources none → physical units [1357.79 h] |
| PRO-RD-MF-170 | Manufacturing of Road Markings for Road Works | 2026-12-21 → 2026-12-12 (-9d) | 2027-03-27 → 2027-03-17 (-10d) |  | none → -60d | resources none → physical units [1357.79 h] |
| 1DL | **1st Material Delivery & Site Inspection** | 2026-11-22 → 2026-09-13 (-70d) | 2027-04-18 → 2027-04-03 (-15d) |  |  |  |
| 1 | **Road Works** | 2026-11-22 → 2026-09-13 (-70d) | 2027-03-14 → 2027-01-21 (-52d) |  |  |  |
| PRO-RD-1DL-100 | 1ST Material Delivery for Subgrade of Road Works | 2026-11-22 → 2026-09-13 A (-70d) | 2026-11-29 → 2026-09-23 A (-67d) | 0% → 100% |  | resources none → physical units [118.81 h] |
| PRO-RD-1DL-110 | 1ST Material Delivery for Aggregate Base Course of Road Works | 2026-12-15 → 2026-09-13 A (-93d) | 2026-12-22 → 2026-09-23 A (-90d) | 0% → 100% |  | resources none → physical units [118.81 h] |
| PRO-RD-1DL-120 | 1ST Material Delivery for Prime Coat of Road Works | 2027-01-07 → 2026-09-13 A (-116d) | 2027-01-24 → 2026-09-23 A (-123d) | 0% → 100% |  | resources none → physical units [254.58 h] |
| PRO-RD-1DL-130 | 1ST Material Delivery for Asphaltic Base Course Layer of Road Works | 2027-01-31 → 2026-09-13 A (-140d) | 2027-02-07 → 2026-09-23 A (-137d) | 0% → 100% |  | resources none → physical units [118.81 h] |
| PRO-RD-1DL-180 | 1ST Material Delivery for Asphaltic Wearing Course Layer for Roads Network | 2027-02-23 → 2026-09-13 A (-163d) | 2027-03-02 → 2026-09-23 A (-160d) | 0% → 100% |  | resources none → physical units [118.81 h] |
| PRO-RD-1DL-190 | 1ST Material Delivery for Tack Coat Layer for Roads Network | 2027-03-03 → 2027-01-14 (-48d) | 2027-03-14 → 2027-01-21 (-52d) |  | none → -48d | resources none → physical units [118.81 h] |
| 2 | **Pavement Works** | 2027-03-17 → 2027-02-08 (-37d) | 2027-04-01 → 2027-02-23 (-37d) |  |  |  |
| PRO-RD-1DL-140 | 1ST Material Delivery for Interlock Tiles of Landscaping | 2027-03-17 → 2027-02-08 (-37d) | 2027-03-24 → 2027-02-15 (-37d) |  | none → -58d | resources none → physical units [118.81 h] |
| PRO-RD-1DL-150 | 1ST Material Delivery for Curbstones of Landscaping | 2027-03-25 → 2027-02-16 (-37d) | 2027-04-01 → 2027-02-23 (-37d) |  | none → -54d | resources none → physical units [118.81 h] |
| 3 | **Traffic Signs Boards and Roads Marking** | 2027-04-03 → 2027-03-18 (-16d) | 2027-04-18 → 2027-04-03 (-15d) |  |  |  |
| PRO-RD-1DL-170 | 1ST Material Delivery for Road Markings of Road Works | 2027-04-03 → 2027-03-18 (-16d) | 2027-04-10 → 2027-03-25 (-16d) |  | none → -60d | resources none → physical units [118.81 h] |
| PRO-RD-1DL-160 | 1ST Material Delivery for Traffic Signs Boards of Road Works | 2027-04-11 → 2027-03-27 (-15d) | 2027-04-18 → 2027-04-03 (-15d) |  | none → -60d | resources none → physical units [118.81 h] |
| DL | **Material Delivery & Site Inspection** | 2026-11-30 → 2026-09-27 (-64d) | 2027-05-09 → 2027-05-20 (+11d) |  |  |  |
| 1 | **Pre-Bituminous Construction** | 2026-11-30 → 2026-09-27 (-64d) | 2027-01-17 → 2026-12-02 (-46d) |  |  |  |
| PRO-R25-RD-DL-100 | Material Delivery & Site Inspection for Subgrade of Road Works | 2026-11-30 → 2026-09-27 A (-64d) | 2026-12-23 → 2026-11-09 (-44d) | 0% → 60% | none → -38d | resources Excavations (including Roads , Plots and Pond); Embankments to the Site and Roads (including Roads , Plots and Pond); Subgrade → Excavations (including Roads , Plots and Pond); Embankments to the Site and Roads (including Roads , Plots and Pond); Subgrade; physical units [356.42 h] |
| PRO-R25-RD-DL-110 | Material Delivery & Site Inspection for Aggregate Base Course of Road Works | 2026-12-24 → 2026-09-27 A (-88d) | 2027-01-17 → 2026-12-02 (-46d) | 0% → 60% | none → -38d | resources Aggregate base course → Aggregate base course; physical units [356.42 h] |
| 4 | **Bituminous Construction** | 2027-01-25 → 2026-09-27 (-120d) | 2027-03-31 → 2027-02-03 (-56d) |  |  |  |
| PRO-R25-RD-DL-160 | Material Delivery & Site Inspection for Prime Coat Layer of Road Works | 2027-01-25 → 2026-09-27 A (-120d) | 2027-02-06 → 2026-12-15 (-53d) | 0% → 60% | none → -38d | resources Bituminous base course (Grading I - Class A), including Prime Coat (MC1) → Bituminous base course (Grading I - Class A), including Prime Coat (MC1); physical units [186.7 h] |
| PRO-R25-RD-DL-170 | Material Delivery & Site Inspection for Asphaltic Base Course Layer of Road Works | 2027-02-08 → 2026-09-27 A (-134d) | 2027-02-20 → 2026-12-28 (-54d) | 0% → 60% | none → -38d | resources Bituminous base course (Grading I - Class A), including Prime Coat (MC1) → Bituminous base course (Grading I - Class A), including Prime Coat (MC1); physical units [186.7 h] |
| PRO-RD-DL-200 | Material Delivery for Asphaltic Wearing Course Layer for Roads Network | 2027-03-03 → 2026-09-27 A (-157d) | 2027-03-18 → 2027-01-10 (-67d) | 0% → 60% | none → -38d | resources Bituminous concrete wearing course, (Grading I - Class A), including tack coat (RC2) → Bituminous concrete wearing course, (Grading I - Class A), including tack coat (RC2); physical units [186.7 h] |
| PRO-RD-DL-210 | Material Delivery for Tack Coat Layer for Roads Network | 2027-03-20 → 2027-01-23 (-56d) | 2027-03-31 → 2027-02-03 (-56d) |  | none → -48d | resources Bituminous concrete wearing course, (Grading I - Class A), including tack coat (RC2) → Bituminous concrete wearing course, (Grading I - Class A), including tack coat (RC2); physical units [186.7 h] |
| 2 | **Pavement Works** | 2027-04-01 → 2027-02-16 (-44d) | 2027-04-26 → 2027-03-16 (-41d) |  |  |  |
| PRO-R25-RD-DL-120 | Material Delivery & Site Inspection of Interlock Tiles for Landscaping | 2027-04-01 → 2027-02-16 (-44d) | 2027-04-13 → 2027-02-28 (-44d) |  | none → -58d | resources 60mm thick; 80mm thick → 60mm thick; 80mm thick; physical units [186.7 h] |
| PRO-R25-RD-DL-130 | Material Delivery & Site Inspection of Curbstones for Landscaping | 2027-04-14 → 2027-03-01 (-44d) | 2027-04-26 → 2027-03-16 (-41d) |  | none → -58d | resources Precast Concrete Curbstone 150X300X900 Type (K1-A); Precast Concrete Curbstone 100X200X500 Type (K4); Precast Concrete Curbstone 150X300X500 Type (K1-B); Precast Concrete Curbstone Type (K1-C); Flush Kerb Type (D) → Precast Concrete Curbstone 150X300X900 Type (K1-A); Precast Concrete Curbstone 100X200X500 Type (K4); Precast Concrete Curbstone 150X300X500 Type (K1-B); Precast Concrete Curbstone Type (K1-C); Flush Kerb Type (D); physical units [186.7 h] |
| 3 | **Traffic Signs Boards and Roads Marking** | 2027-04-14 → 2027-04-20 (+6d) | 2027-05-09 → 2027-05-20 (+11d) |  |  |  |
| PRO-R25-RD-DL-150 | Material Delivery & Site Inspection of Road Markings For Road Works | 2027-04-14 → 2027-04-20 (+6d) | 2027-04-26 → 2027-05-02 (+6d) |  | none → -85d | resources Retroreflective Thermoplastic White Traffic lines; Retroreflective Thermoplastic Yellow, Traffic lines; Precast Concrete Blister Warning Tactile Paver Brown Finish 300*300*60mm → Retroreflective Thermoplastic White Traffic lines; Retroreflective Thermoplastic Yellow, Traffic lines; Precast Concrete Blister Warning Tactile Paver Brown Finish 300*300*60mm; physical units [186.7 h] |
| PRO-R25-RD-DL-140 | Material Delivery & Site Inspection of Traffic Signs Boards For Road Works | 2027-04-27 → 2027-05-03 (+6d) | 2027-05-09 → 2027-05-20 (+11d) |  | none → -85d | resources Traffic signs, ground mounted, Sheet Aluminum, (breakaway) Single post IPE, with all accessories → Traffic signs, ground mounted, Sheet Aluminum, (breakaway) Single post IPE, with all accessories; physical units [186.7 h] |
| 1 | **Superstructure Works** | 2026-11-02 → 2026-09-22 (-41d) | 2027-01-02 → 2026-12-27 (-6d) |  |  |  |
| 1 | **Issuance of Purchase Orders** | 2026-11-02 → 2026-09-22 (-41d) | 2026-11-14 → 2026-11-16 (+2d) |  |  |  |
| SL1 | **Water Pump Station** | 2026-11-02 → 2026-10-20 (-13d) | 2026-11-05 → 2026-10-24 (-12d) |  |  |  |
| PRO-LS-CV-PO-20 | Issuance of Purchase Order for Works for Water Pump Station | 2026-11-02 → 2026-10-20 A (-13d) | 2026-11-05 → 2026-10-24 A (-12d) | 0% → 100% |  | resources none → physical units [67.89 h] |
| SL11 | **Storage Tank (TSE)** | 2026-11-07 → 2026-11-09 (+2d) | 2026-11-14 → 2026-11-16 (+2d) |  |  |  |
| PRO-TSE-CV-PO-30 | Issuance of Purchase Order for Works for Storage Tank (TSE) | 2026-11-07 → 2026-11-09 (+2d) | 2026-11-14 → 2026-11-16 (+2d) |  | none → -92d | resources none → physical units [118.81 h] |
| SL111 | **Control Room** | 2026-11-07 → 2026-09-22 (-46d) | 2026-11-14 → 2026-09-30 (-45d) |  |  |  |
| PRO-TSE-CV-PO-40 | Issuance of Purchase Order for Works for Control Room | 2026-11-07 → 2026-09-22 A (-46d) | 2026-11-14 → 2026-09-30 A (-45d) | 0% → 100% |  | resources none → physical units [118.81 h] |
| SL | **Sewage Pump Stations** | 2026-11-07 → 2026-09-22 (-46d) | 2026-11-14 → 2026-09-30 (-45d) |  |  |  |
| PRO-SPS-CV-PO-10 | Issuance of Purchase Order for Works of Sewage Pump Station | 2026-11-07 → 2026-09-22 A (-46d) | 2026-11-14 → 2026-09-30 A (-45d) | 0% → 100% |  | resources none → physical units [118.81 h] |
| SL12 | **Gaurd Room** | 2026-11-07 → 2026-09-26 (-42d) | 2026-11-14 → 2026-10-03 (-42d) |  |  |  |
| PRO-GR-CV-PO-40 | Issuance of Purchase Order for Materials for Gaurd Room | 2026-11-07 → 2026-09-26 A (-42d) | 2026-11-14 → 2026-10-03 A (-42d) | 0% → 100% |  | resources none → physical units [118.81 h] |
| SL121 | **Boundary Fence** | 2026-11-07 → 2026-09-26 (-42d) | 2026-11-14 → 2026-10-03 (-42d) |  |  |  |
| PRO-FE-CV-PO-50 | Issuance of Purchase Order for Materials for Boundary Fence | 2026-11-07 → 2026-09-26 A (-42d) | 2026-11-14 → 2026-10-03 A (-42d) | 0% → 100% |  | resources none → physical units [118.81 h] |
| 2 | **Manufacturing of Material** | 2026-11-07 → 2026-10-01 (-37d) | 2026-12-08 → 2026-12-02 (-6d) |  |  |  |
| SL1 | **Water Pump Station** | 2026-11-07 → 2026-10-25 (-13d) | 2026-11-14 → 2026-11-01 (-13d) |  |  |  |
| PRO-LS-CV-MF-30 | Manufacturing of Works for Works for Water Pump Station | 2026-11-07 → 2026-10-25 A (-13d) | 2026-11-14 → 2026-11-01 A (-13d) | 0% → 100% |  | resources none → physical units [118.81 h] |
| SL11 | **Storage Tank (TSE)** | 2026-11-15 → 2026-11-17 (+2d) | 2026-11-30 → 2026-12-02 (+2d) |  |  |  |
| PRO-TSE-CV-MF-40 | Manufacturing of Works for Storage Tank (TSE) | 2026-11-15 → 2026-11-17 (+2d) | 2026-11-30 → 2026-12-02 (+2d) |  | none → -53d | resources none → physical units [237.61 h] |
| SL111 | **Control Room** | 2026-11-15 → 2026-10-01 (-45d) | 2026-12-08 → 2026-10-31 (-38d) |  |  |  |
| PRO-TSE-CV-MF-50 | Manufacturing of Works for Control Room | 2026-11-15 → 2026-10-01 A (-45d) | 2026-12-08 → 2026-10-31 A (-38d) | 0% → 100% |  | resources none → physical units [356.42 h] |
| SL | **Sewage Pump Stations** | 2026-11-15 → 2026-10-01 (-45d) | 2026-12-08 → 2026-10-25 (-44d) |  |  |  |
| PRO-SPS-CV-MF-10 | Manufacturing of Works of Sewage Pump Station | 2026-11-15 → 2026-10-01 A (-45d) | 2026-12-08 → 2026-10-25 A (-44d) | 0% → 100% |  | resources none → physical units [356.42 h] |
| SL12 | **Gaurd Room** | 2026-11-15 → 2026-10-04 (-42d) | 2026-12-08 → 2026-11-01 (-37d) |  |  |  |
| PRO-GR-CV-MF-50 | Manufacturing of Materials for Gaurd Room | 2026-11-15 → 2026-10-04 A (-42d) | 2026-12-08 → 2026-11-01 A (-37d) | 0% → 100% |  | resources none → physical units [356.42 h] |
| SL121 | **Boundary Fence** | 2026-11-15 → 2026-10-04 (-42d) | 2026-12-08 → 2026-10-27 (-42d) |  |  |  |
| PRO-FE-CV-MF-60 | Manufacturing of Materials for Boundary Fence | 2026-11-15 → 2026-10-04 A (-42d) | 2026-12-08 → 2026-10-27 A (-42d) | 0% → 100% |  | resources none → physical units [356.42 h] |
| 3 | **1st Material Delivery & Site Inspection** | 2026-11-07 → 2026-10-26 (-12d) | 2026-12-16 → 2026-12-10 (-6d) |  |  |  |
| SL1 | **Water Pump Station** | 2026-11-07 → 2026-10-31 (-7d) |  |  |  |  |
| PRO-LS-CV-1DL-40 | 1ST Material Delivery for Works of Water Pump Station | 2026-11-07 → 2026-10-31 A (-7d) |  | 0% → 30% | none → -53d | resources none → physical units [101.83 h] |
| SL11 | **Storage Tank (TSE)** | 2026-12-01 → 2026-12-03 (+2d) | 2026-12-08 → 2026-12-10 (+2d) |  |  |  |
| PRO-TSE-CV-1DL-50 | 1ST Material Delivery for Works for Storage Tank (TSE) | 2026-12-01 → 2026-12-03 (+2d) | 2026-12-08 → 2026-12-10 (+2d) |  | none → -53d | resources none → physical units [118.81 h] |

| ID | Task | Start | Finish | Complete | Total float | Other |
| --- | --- | --- | --- | --- | --- | --- |
| SL111 | **Control Room** | 2026-12-09 → 2026-11-01 (-38d) | 2026-12-16 → 2026-12-09 (-7d) |  |  |  |
| PRO-TSE-CV-1DL-60 | 1ST Material Delivery for Works for Control Room | 2026-12-09 → 2026-11-01 A (-38d) | 2026-12-16 → 2026-12-09 (-7d) | 0% → 17% | none → -53d | resources none → physical units [118.81 h] |
| SL | **Sewage Pump Stations** | 2026-12-09 → 2026-10-26 (-44d) | 2026-12-16 → 2026-12-03 (-13d) |  |  |  |
| PRO-SPS-CV-1DL-10 | 1ST Material Delivery for Works of Sewage Pump Station | 2026-12-09 → 2026-10-26 A (-44d) | 2026-12-16 → 2026-12-03 (-13d) | 0% → 86% | none → -53d | resources none → physical units [118.81 h] |
| SL12 | **Gaurd Room** | 2026-12-09 → 2026-12-03 (-6d) | 2026-12-16 → 2026-12-10 (-6d) |  |  |  |
| PRO-GR-CV-1DL-60 | 1ST Material Delivery for Materials for Gaurd Room | 2026-12-09 → 2026-12-03 (-6d) | 2026-12-16 → 2026-12-10 (-6d) |  | none → -53d | resources none → physical units [118.81 h] |
| SL121 | **Boundary Fence** | 2026-12-09 → 2026-10-28 (-42d) | 2026-12-16 → 2026-12-06 (-10d) |  |  |  |
| PRO-FE-CV-1DL-70 | 1ST Material Delivery for Materials for Boundary Fence | 2026-12-09 → 2026-10-28 A (-42d) | 2026-12-16 → 2026-12-06 (-10d) | 0% → 57% | none → -49d | resources none → physical units [118.81 h] |
| 4 | **Material Delivery & Site Inspection** | 2026-11-07 → 2026-10-26 (-12d) | 2027-01-02 → 2026-12-27 (-6d) |  |  |  |
| SL1 | **Water Pump Station** | 2026-11-07 → 2026-10-31 (-7d) | 2026-11-17 → 2026-11-16 (-1d) |  |  |  |
| PRO-LS-CV-DL-50 | Material Delivery & Site Inspection for Works for Water Pump Station | 2026-11-07 → 2026-10-31 A (-7d) | 2026-11-17 → 2026-11-16 (-1d) | 0% → 30% | none → -53d | resources 4.5 KG CO2 Type Fire Extinguishers; 6 KG ABC Type Fire Extinguishers; 15 mm dia.; 25 mm dia.; 32 mm dia.; 40 mm dia.; 80 mm dia.; 200 mm dia.; 250 mm dia.; 20 mm; 25 mm; 32 mm; 40 mm; 50 mm; 100 mm; 150 mm; 200 mm; 250 mm; Altitude control valve assembly, size 200 mm; Supply, install, connection, testing and commssionigs horizontal bladder type pressure tank with capacity 1500 liter according to manufacturer's detail and specification - PS-PT-1; Supply, install, connection, testing and commssionigs horizontal bladder type pressure tank with capacity 300 liter according to manufacturer's detail and specification - PS-PT-2; Chemical DosingTank (CDT) 6000 liters capacity polytheylene tank With pump assembly.; Actual capacity 1.5 Ton; Actual capacity 2.0 Ton; Air Flow 280 l/s @ 150 pa; Air Flow 3200 l/s @ 100 pa; Air Flow 110 l/s @ 50 pa; Air Flow 70 l/s @ 50 pa; Air Flow 35 l/s @ 35 pa; Air Flow 105 l/s @ 50 pa; Air Flow 180 l/s @ 0.01 pa; Galvanized sheet metal ducts; Supply Liner Slot diffuser 3 slots 1 inch; Return Liner Slot diffuser 3 slots 1 inch; Exhaust Grill 150mm x 150mm; Sand trap louver 2400mm x 1000mm; Sound attenuator size 1050 x 650 x 1000 m; Pump Set for FF Supply (FP01.FP02); Pump Set for Domestic Supply (BP01 / BP02); Pump Set for Irrigation Supply (IRR01 / IRR02); Pump Set for Drainage System; Pump Set for SW Force Main (1W+1S); acoustical tiles suspended ceiling 600x600mm concealed metal; 100 mm thickness lean concrete under the foundation; Foundation; Grade Beams; Slab on grade; Beams; Columns; Slabs; Lightweight Concrete Roof insulation as per Architect's specification; Hollow Concrete masonry unit, 150 mm thick wall for internal block; Insulated brickwork. with expanded polystyrene 200mm thick for External block; Hollow Concrete masonry unit, 300 mm thick wall for External block; 2 perpendicular layers of cold bitumen coats; 2 layer of 4mm HDPE membrane, 2 perpendicular layers cold bitumen coats; 1 layer EPOXY Paint 300 micron; Membrane fully bonded to prime deck and upstand; Geotextile Filter membrane uv resistance; 85mm thick thermal insulation; 1.5mm thick epdm waterproofing membrane; D1 - 1100 mm width x 2200 mm height; D4 - 1800 mm width x 3000 mm height; 1000 mm width x 2400 mm high (L1); Supply and install External plastering to walls and columns min. 15mm thick with cement mortar of specified grade including galvanized mesh, corner beads, angle beads, CE bonds to rough and smooth plaster complete the work as per drawing & specification.; Supply and install 2 coats of weatherproof paint at walls including one prime coat and two coats and putty to give smooth Surface as a base for paint including fiberglass tape to joints and all other accessories as per manufacturers approved specification; Supply and install internal plastering to walls and columns min. 15mm thick with cement mortar of specified grade including galvanized mesh, corner beads, angle beads, CE bonds to rough and smooth plaster complete the work as per drawing & specification.; Supply and install 2 coats of epoxy paint at walls including one prime coat and two coats and putty to give smooth Surface as a base for paint including fiberglass tape to joints and all other accessories as per manufacturers approved specification; Supply and install 300*300mm glazed ceramic wall tiles on cement mortar and including rough and smooth plaster, galvanized mesh, corner beads, angle beads, CE bonds; Acid Proof Tiles; Supply and install 600*600mm porcelain tiles with approved quality on 30 mm mortar including sand fill material as approved by the Client; Supply and install 12.5mm thk, gypsum board suspended ceiling including suspension system, paints as required specification and material as approved by the Client including frames supports, access openings and all other accessories to complete as shown in → 100 mm thickness lean concrete under the foundation; Foundation; Grade Beams; Slab on grade; Beams; Columns; Slabs; Lightweight Concrete Roof insulation as per Architect's specification; Hollow Concrete masonry unit, 150 mm thick wall for internal block; Insulated brickwork. with expanded polystyrene 200mm thick for External block; Hollow Concrete masonry unit, 300 mm thick wall for External block; 2 perpendicular layers of cold bitumen coats; 2 layer of 4mm HDPE membrane, 2 perpendicular layers cold bitumen coats; 1 layer EPOXY Paint 300 micron; Membrane fully bonded to prime deck and upstand; Geotextile Filter membrane uv resistance; 85mm thick thermal insulation; 1.5mm thick epdm waterproofing membrane; D1 - 1100 mm width x 2200 mm height; D4 - 1800 mm width x 3000 mm height; 1000 mm width x 2400 mm high (L1); Supply and install External plastering to walls and columns min. 15mm thick with cement mortar of specified grade including galvanized mesh, corner beads, angle beads, CE bonds to rough and smooth plaster complete the work as per drawing & specification.; Supply and install 2 coats of weatherproof paint at walls including one prime coat and two coats and putty to give smooth Surface as a base for paint including fiberglass tape to joints and all other accessories as per manufacturers approved specification; Supply and install internal plastering to walls and columns min. 15mm thick with cement mortar of specified grade including galvanized mesh, corner beads, angle beads, CE bonds to rough and smooth plaster complete the work as per drawing & specification.; Supply and install 2 coats of epoxy paint at walls including one prime coat and two coats and putty to give smooth Surface as a base for paint including fiberglass tape to joints and all other accessories as per manufacturers approved specification; Supply and install 300*300mm glazed ceramic wall tiles on cement mortar and including rough and smooth plaster, galvanized mesh, corner beads, angle beads, CE bonds; Acid Proof Tiles; Supply and install 600*600mm porcelain tiles with approved quality on 30 mm mortar including sand fill material as approved by the Client; Supply and install 12.5mm thk, gypsum board suspended ceiling including suspension system, paints as required specification and material as approved by the Client including frames supports, access openings and all other accessories to complete as shown in; 4.5 KG CO2 Type Fire Extinguishers; 6 KG ABC Type Fire Extinguishers; 15 mm dia.; 25 mm dia.; 32 mm dia.; 40 mm dia.; 80 mm dia.; 200 mm dia.; 250 mm dia.; 20 mm; 25 mm; 32 mm; 40 mm; 50 mm; 100 mm; 150 mm; 200 mm; 250 mm; Altitude control valve assembly, size 200 mm; Supply, install, connection, testing and commssionigs horizontal bladder type pressure tank with capacity 1500 liter according to manufacturer's detail and specification - PS-PT-1; Supply, install, connection, testing and commssionigs horizontal bladder type pressure tank with capacity 300 liter according to manufacturer's detail and specification - PS-PT-2; Chemical DosingTank (CDT) 6000 liters capacity polytheylene tank With pump assembly.; Actual capacity 1.5 Ton; Actual capacity 2.0 Ton; Air Flow 280 l/s @ 150 pa; Air Flow 3200 l/s @ 100 pa; Air Flow 110 l/s @ 50 pa; Air Flow 70 l/s @ 50 pa; Air Flow 35 l/s @ 35 pa; Air Flow 105 l/s @ 50 pa; Air Flow 180 l/s @ 0.01 pa; Galvanized sheet metal ducts; Supply Liner Slot diffuser 3 slots 1 inch; Return Liner Slot diffuser 3 slots 1 inch; Exhaust Grill 150mm x 150mm; Sand trap louver 2400mm x 1000mm; Sound attenuator size 1050 x 650 x 1000 m; Pump Set for FF Supply (FP01.FP02); Pump Set for Domestic Supply (BP01 / BP02); Pump Set for Irrigation Supply (IRR01 / IRR02); Pump Set for Drainage System; Pump Set for SW Force Main (1W+1S); acoustical tiles suspended ceiling 600x600mm concealed metal; physical units [169.72 h] |
| SL11 | **Storage Tank (TSE)** | 2026-11-18 → 2026-11-17 (-1d) | 2026-12-19 → 2026-12-17 (-2d) |  |  |  |
| PRO-TSE-CV-DL-60 | Material Delivery & Site Inspection for Works for Storage Tank (TSE) | 2026-11-18 → 2026-11-17 (-1d) | 2026-12-19 → 2026-12-17 (-2d) |  | none → -32d | resources 100 mm thickness lean concrete under the foundation; Foundation; 2 perpendicular layers of cold bitumen coats; 2 layer of 4mm HDPE membrane, 2 perpendicular layers cold bitumen coats; 1 layer EPOXY Paint 300 micron; Membrane fully bonded to prime deck and upstand; Geotextile Filter membrane uv resistance; 85mm thick thermal insulation; 1.5mm thick epdm waterproofing membrane → 100 mm thickness lean concrete under the foundation; Foundation; 2 perpendicular layers of cold bitumen coats; 2 layer of 4mm HDPE membrane, 2 perpendicular layers cold bitumen coats; 1 layer EPOXY Paint 300 micron; Membrane fully bonded to prime deck and upstand; Geotextile Filter membrane uv resistance; 85mm thick thermal insulation; 1.5mm thick epdm waterproofing membrane; physical units [458.25 h] |
| SL111 | **Control Room** | 2026-12-17 → 2026-11-01 (-46d) | 2027-01-02 → 2026-12-23 (-10d) |  |  |  |
| PRO-TSE-CV-DL-70 | Material Delivery & Site Inspection for Works for Control Room | 2026-12-17 → 2026-11-01 A (-46d) | 2027-01-02 → 2026-12-23 (-10d) | 0% → 17% | none → -52d | resources 100 mm thickness lean concrete under the foundation; Foundation; Grade Beams; Beams; Columns; Slabs; Lightweight Concrete Roof insulation as per Architect's specification; Hollow Concrete masonry unit, 100 mm thick wall for internal block; Hollow Concrete masonry unit, 150 mm thick wall for internal block; Insulated brickwork. with expanded polystyrene 200mm thick for External block; Hollow Concrete masonry unit, 300 mm thick wall for External block; 2 perpendicular layers of cold bitumen coats; 2 layer of 4mm HDPE membrane, 2 perpendicular layers cold bitumen coats; 1 layer EPOXY Paint 300 micron; Membrane fully bonded to prime deck and upstand; Geotextile Filter membrane uv resistance; 85mm thick thermal insulation; 1.5mm thick epdm waterproofing membrane; D1 - 1100 mm width x 2200 mm height; D2 - 1070 mm width x 2225 mm height; D3 - 1200 mm width x 3000 mm height; D4 - 1800 mm width x 3000 mm height; Roller Shuter - 3000mm width x 4000mm height; D1' 1900mm width x 2950mm height; D2' 1200mm width x 2150mm height; D3' 800mm width x 2050mm height; D4' 1700mm width x 2050mm height; 1500 mm width x 1200 mm high (W01); 1200 mm width x 1200 mm high (W02); 1000 mm width x 2400 mm high (L1); Supply and install External plastering to walls and columns min. 15mm thick with cement mortar of specified grade including galvanized mesh, corner beads, angle beads, CE bonds to rough and smooth plaster complete the work as per drawing & specification.; Supply and install 2 coats of weatherproof paint at walls including one prime coat and two coats and putty to give smooth Surface as a base for paint including fiberglass tape to joints and all other accessories as per manufacturers approved specification; Supply and install internal plastering to walls and columns min. 15mm thick with cement mortar of specified grade including galvanized mesh, corner beads, angle beads, CE bonds to rough and smooth plaster complete the work as per drawing & specification.; Supply and install 2 coats of epoxy paint at walls including one prime coat and two coats and putty to give smooth Surface as a base for paint including fiberglass tape to joints and all other accessories as per manufacturers approved specification; Supply and install 300*300mm glazed ceramic wall tiles on cement mortar and including rough and smooth plaster, galvanized mesh, corner beads, angle beads, CE bonds; Acid Proof Tiles; Supply and install 600*600mm porcelain tiles with approved quality on 30 mm mortar including sand fill material as approved by the Client; Supply and install 12.5mm thk, gypsum board suspended ceiling including suspension system, paints as required specification and material as approved by the Client including frames supports, access openings and all other accessories to complete as shown in; 4.5 KG CO2 Type Fire Extinguishers; 6 KG ABC Type Fire Extinguishers; 15 mm dia.; 25 mm dia.; 32 mm dia.; 40 mm dia.; 80 mm dia.; 200 mm dia.; 250 mm dia.; Supply and installation of western water closet, flush tank type, heavy duty, one piece SASO certified, approval of client, dimesion not less than 40 cm width, 68 cm length including all other accessories as per drawings and specification; Supply and installation of urinal, heavy duty, one piece SASO certified, approval of client, including all other accessories as per drawings and specification; Supply and installation of Bib tap with Perenial Hose (BPH) with stainless steel flexible hose and cast brass chromeplated hand including all other accessories to complete as per drawing and specification.; Supply, installation, testing and commissioning of Lavatory / wash basin with counter for toilets, built in soap dispenser, mixer, single lever arm including all accessories as per drawings and specification and to the approval of the client; Provide and install paper towel dispenser, surface mounted, satin finish stainless steel as per approved sample including accessories.; Provide and install mirror as per approved sample including frames, backing and all accessories to complete.; Provide and install towel ring, surface mounted, satin finish stainless steel as per approved sample including accessories.; Hose Bib; Valve Chamber; Retarding Chamber; Inspection Chamber; Neutralization pit 1000x1000mm; 25mm diameter; 32mm diameter; 40mm diameter; 50mm diameter; 75mm diameter; 80mm diameter; 100mm diameter; 110mm diameter; 15mm diameter; 20mm diameter; 150mm diameter; 200mm diameter; 250mm diameter; 13mm diameter; Gully Trap; Floor drain 75mm; Floor cleanout 110mm; Roof drain; GRP water tanks capacity of each 1000 liter complete with all fittings, all valves and concrete pad; Water Heater 30ltr; Actual capacity 1.0 Ton; Actual capacity 1.5 Ton; Supply and install flexible duct with insulation; size 8 inch dia.; Supply and install flexible duct with insulation; size 10 inch dia.; Package Unit 57.4 kW "thermal"; Variable Air Volume (VAV 01); Variable Air Volume (VAV 02); Variable Air Volume (VAV 03); Variable Air Volume (VAV 04); Variable Air Volume (VAV 05); Variable Air Volume (VAV 06); Galvanized sheet metal ducts; Supply Liner Slot diffuser 3 slots 1 inch; Return Liner Slot diffuser 3 slots 1 inch; Exhaust Grill 150mm x 150mm; Exhast Air fan 515 l/s @ 150 pa; Exhast Air fan 3200 l/s @ 100 pa; Sand trap louver 2400mm x 1000mm; Sound attenuator size 1050 x 650 x 1000 m; Fire suppression system FM200 57 kg fill capacity consists of 2 cylinders, duty + standby, complete with all required mechanical, electrical , and control items to install, test, and operate the system.; Fire suppression system NOVEC 1230 134.1 kg fill capacity consists of 2 cylinders, duty + standby, complete with all required mechanical, electrical , and control items to install, test, and operate the system.; Fire suppression system NOVEC 1230 29.2 kg fill capacity consists of 2 cylinders, duty + standby, complete with all required mechanical, electrical , and control items to install, test, and operate the system.; Fire suppression system NOVEC 1230 53.5 kg fill capacity consists of 2 cylinders, duty + standby, complete with all required mechanical, electrical , and control items to install, test, and operate the system.; Fire suppression system NOVEC 1230 82.3 kg fill capacity consists of 2 cylinders, duty + standby, complete with all required mechanical, electrical , and control items to install, test, and operate the system.; Fire suppression system NOVEC 1230 42.5 kg fill capacity consists of 2 cylinders, duty + standby, complete with all required mechanical, electrical , and control items to install, test, and operate the system.; Supply and install steel ladder with cage at pump room for as per drawings and specification.; Overhead Travelling Crane; lifting capacity 1.50 ton manual type all to manufacturer's detail and specifications. - PS-OC-1; Hot dipped Galvanized steel Trench Grating; Hot dipped Galvanized steel Channel Cover Plate; Steel Frame and Cover 1200 x 1200; Vent Cowl (Standard Size); Steel Handrail of 1.2m height; 30W LED linear Pendant lighting; 30W LED Emergency linear Pendant lighting; 47W LED linear Pendant lighting; 47W LED Emergency linear Pendant lighting; 13W recess mounted LED down light fitting; 13W recess emergency mounted LED down light fitting with 1.5 Hr Battery; 10.4W LED Exit light with 1.5 Hr Battery; Distribution board (MDB-PR-01); Distribution board (LPDB-PR-01); Distribution board (MDB-CB-01); Distribution board (LPDB-CR-01); 13A,1? 230V Twin socket outlet with switch; 13A,1? 230V Industrial socket outlet with switch; 13A, Twin Socket outlet, Weather Proof; 400A, 3P Disconnect switch; 30A, 2P AC Disconnect Switch; 30A, 3P AC Disconnect Switch; 60A, 3P AC Disconnect Switch; 20A Duplex Receptacle Floor Mounted; Single gang Lighting switch; Double gang Lighting switch; 2way Single gang Lighting switch; Cable Tray 300 mm X 100 mm; 4CX6 Cu. XLPE FRLSZH Cable; 4CX10 Cu. XLPE FRLSZH Cable; 4CX16 Cu. XLPE FRLSZH Cable; 4CX25 Cu. XLPE FRLSZH Cable; 4CX35 Cu. XLPE FRLSZH Cable; 4CX185 Cu. XLPE FRLSZH Cable; 120mm2 Tinned copper wire; Grounding rod 20mmX3m; Grounding rod with Pit 20mmX3m; Earthing Bar; Cu earth strip 25X4 mm; 1.5m Air terminal; 4mm2 Cu./FRLSZH Cable; 6mm2 Cu./FRLSZH Cable; 10mm2 Cu./FRLSZH Cable; 16mm2 Cu./FRLSZH Cable; 95mm2 Cu./FRLSZH Cable; 120mm2 Cu./FRLSZH Cable; 30KVA, 400V, 3PH, 60Hz UPS; CB-UPS-01 panel; Supply, install and connection of a SCADA server cum workstation complete with network rack, network switch, sensors, printer, armoured cables with cable tray & conduits, level transmitter, liquid flow meter, quality sensor (COD,BOD,pH), pressure transmit; Fire Alarm Control panel with fire alarm zoning with Mimic panel with fire alarm zoning; Supply, install to site and installation of the Aspirating Smoke Detector complete with accessories and pipes; Supply, install to site and installation of the addressable manual call point with operation safety glass breaking and pushbutton; Supply, install to site and installation of the photoelectric smoke detector with base; Supply, install to site and installation of the heat detector with base; Supply, install to site and installation of multi criteria sensors with base; Supply, install to site and installation of Hydrogen detector; Supply, install to site and installation of Duct detector; Sounder With Beacon; Remote LED Indicator; Single Channel Interface Module; Addressable Control module for Sounders; Addressable relay module for interface; Addressable monitor module for interface; Supply, install to site and installation Fire loop cable; Supply, install to site and installation of power cable; Fire Fighter’s Telephone Centre; Fireman’s Telephone Jack; Voice Command Center; DACT (Auto - Dailer) for 24x7 Civil Defence; Transmission Communication cable - Fiber Optics; Transmission Communication cable - Ethernet Cable; Supply, install to site and installation of power supply system for fire alarm control panel; acoustical tiles suspended ceiling 600x600mm concealed metal → 100 mm thickness lean concrete under the foundation; Foundation; Grade Beams; Beams; Columns; Slabs; Lightweight Concrete Roof insulation as per Architect's specification; Hollow Concrete masonry unit, 100 mm thick wall for internal block; Hollow Concrete masonry unit, 150 mm thick wall for internal block; Insulated brickwork. with expanded polystyrene 200mm thick for External block; Hollow Concrete masonry unit, 300 mm thick wall for External block; 2 perpendicular layers of cold bitumen coats; 2 layer of 4mm HDPE membrane, 2 perpendicular layers cold bitumen coats; 1 layer EPOXY Paint 300 micron; Membrane fully bonded to prime deck and upstand; Geotextile Filter membrane uv resistance; 85mm thick thermal insulation; 1.5mm thick epdm waterproofing membrane; D1 - 1100 mm width x 2200 mm height; D2 - 1070 mm width x 2225 mm height; D3 - 1200 mm width x 3000 mm height; D4 - 1800 mm width x 3000 mm height; Roller Shuter - 3000mm width x 4000mm height; D1' 1900mm width x 2950mm height; D2' 1200mm width x 2150mm height; D3' 800mm width x 2050mm height; D4' 1700mm width x 2050mm height; 1500 mm width x 1200 mm high (W01); 1200 mm width x 1200 mm high (W02); 1000 mm width x 2400 mm high (L1); Supply and install External plastering to walls and columns min. 15mm thick with cement mortar of specified grade including galvanized mesh, corner beads, angle beads, CE bonds to rough and smooth plaster complete the work as per drawing & specification.; Supply and install 2 coats of weatherproof paint at walls including one prime coat and two coats and putty to give smooth Surface as a base for paint including fiberglass tape to joints and all other accessories as per manufacturers approved specification; Supply and install internal plastering to walls and columns min. 15mm thick with cement mortar of specified grade including galvanized mesh, corner beads, angle beads, CE bonds to rough and smooth plaster complete the work as per drawing & specification.; Supply and install 2 coats of epoxy paint at walls including one prime coat and two coats and putty to give smooth Surface as a base for paint including fiberglass tape to joints and all other accessories as per manufacturers approved specification; Supply and install 300*300mm glazed ceramic wall tiles on cement mortar and including rough and smooth plaster, galvanized mesh, corner beads, angle beads, CE bonds; Acid Proof Tiles; Supply and install 600*600mm porcelain tiles with approved quality on 30 mm mortar including sand fill material as approved by the Client; Supply and install 12.5mm thk, gypsum board suspended ceiling including suspension system, paints as required specification and material as approved by the Client including frames supports, access openings and all other accessories to complete as shown in; 4.5 KG CO2 Type Fire Extinguishers; 6 KG ABC Type Fire Extinguishers; 15 mm dia.; 25 mm dia.; 32 mm dia.; 40 mm dia.; 80 mm dia.; 200 mm dia.; 250 mm dia.; Supply and installation of western water closet, flush tank type, heavy duty, one piece SASO certified, approval of client, dimesion not less than 40 cm width, 68 cm length including all other accessories as per drawings and specification; Supply and installation of urinal, heavy duty, one piece SASO certified, approval of client, including all other accessories as per drawings and specification; Supply and installation of Bib tap with Perenial Hose (BPH) with stainless steel flexible hose and cast brass chromeplated hand including all other accessories to complete as per drawing and specification.; Supply, installation, testing and commissioning of Lavatory / wash basin with counter for toilets, built in soap dispenser, mixer, single lever arm including all accessories as per drawings and specification and to the approval of the client; Provide and install paper towel dispenser, surface mounted, satin finish stainless steel as per approved sample including accessories.; Provide and install mirror as per approved sample including frames, backing and all accessories to complete.; Provide and install towel ring, surface mounted, satin finish stainless steel as per approved sample including accessories.; Hose Bib; Valve Chamber; Retarding Chamber; Inspection Chamber; Neutralization pit 1000x1000mm; 25mm diameter; 32mm diameter; 40mm diameter; 50mm diameter; 75mm diameter; 80mm diameter; 100mm diameter; 110mm diameter; 15mm diameter; 20mm diameter; 150mm diameter; 200mm diameter; 250mm diameter; 13mm diameter; Gully Trap; Floor drain 75mm; Floor cleanout 110mm; Roof drain; GRP water tanks capacity of each 1000 liter complete with all fittings, all valves and concrete pad; Water Heater 30ltr; Actual capacity 1.0 Ton; Actual capacity 1.5 Ton; Supply and install flexible duct with insulation; size 8 inch dia.; Supply and install flexible duct with insulation; size 10 inch dia.; Package Unit 57.4 kW "thermal"; Variable Air Volume (VAV 01); Variable Air Volume (VAV 02); Variable Air Volume (VAV 03); Variable Air Volume (VAV 04); Variable Air Volume (VAV 05); Variable Air Volume (VAV 06); Galvanized sheet metal ducts; Supply Liner Slot diffuser 3 slots 1 inch; Return Liner Slot diffuser 3 slots 1 inch; Exhaust Grill 150mm x 150mm; Exhast Air fan 515 l/s @ 150 pa; Exhast Air fan 3200 l/s @ 100 pa; Sand trap louver 2400mm x 1000mm; Sound attenuator size 1050 x 650 x 1000 m; Fire suppression system FM200 57 kg fill capacity consists of 2 cylinders, duty + standby, complete with all required mechanical, electrical , and control items to install, test, and operate the system.; Fire suppression system NOVEC 1230 134.1 kg fill capacity consists of 2 cylinders, duty + standby, complete with all required mechanical, electrical , and control items to install, test, and operate the system.; Fire suppression system NOVEC 1230 29.2 kg fill capacity consists of 2 cylinders, duty + standby, complete with all required mechanical, electrical , and control items to install, test, and operate the system.; Fire suppression system NOVEC 1230 53.5 kg fill capacity consists of 2 cylinders, duty + standby, complete with all required mechanical, electrical , and control items to install, test, and operate the system.; Fire suppression system NOVEC 1230 82.3 kg fill capacity consists of 2 cylinders, duty + standby, complete with all required mechanical, electrical , and control items to install, test, and operate the system.; Fire suppression system NOVEC 1230 42.5 kg fill capacity consists of 2 cylinders, duty + standby, complete with all required mechanical, electrical , and control items to install, test, and operate the system.; Supply and install steel ladder with cage at pump room for as per drawings and specification.; Overhead Travelling Crane; lifting capacity 1.50 ton manual type all to manufacturer's detail and specifications. - PS-OC-1; Hot dipped Galvanized steel Trench Grating; Hot dipped Galvanized steel Channel Cover Plate; Steel Frame and Cover 1200 x 1200; Vent Cowl (Standard Size); Steel Handrail of 1.2m height; 30W LED linear Pendant lighting; 30W LED Emergency linear Pendant lighting; 47W LED linear Pendant lighting; 47W LED Emergency linear Pendant lighting; 13W recess mounted LED down light fitting; 13W recess emergency mounted LED down light fitting with 1.5 Hr Battery; 10.4W LED Exit light with 1.5 Hr Battery; Distribution board (MDB-PR-01); Distribution board (LPDB-PR-01); Distribution board (MDB-CB-01); Distribution board (LPDB-CR-01); 13A,1? 230V Twin socket outlet with switch; 13A,1? 230V Industrial socket outlet with switch; 13A, Twin Socket outlet, Weather Proof; 400A, 3P Disconnect switch; 30A, 2P AC Disconnect Switch; 30A, 3P AC Disconnect Switch; 60A, 3P AC Disconnect Switch; 20A Duplex Receptacle Floor Mounted; Single gang Lighting switch; Double gang Lighting switch; 2way Single gang Lighting switch; Cable Tray 300 mm X 100 mm; 4CX6 Cu. XLPE FRLSZH Cable; 4CX10 Cu. XLPE FRLSZH Cable; 4CX16 Cu. XLPE FRLSZH Cable; 4CX25 Cu. XLPE FRLSZH Cable; 4CX35 Cu. XLPE FRLSZH Cable; 4CX185 Cu. XLPE FRLSZH Cable; 120mm2 Tinned copper wire; Grounding rod 20mmX3m; Grounding rod with Pit 20mmX3m; Earthing Bar; Cu earth strip 25X4 mm; 1.5m Air terminal; 4mm2 Cu./FRLSZH Cable; 6mm2 Cu./FRLSZH Cable; 10mm2 Cu./FRLSZH Cable; 16mm2 Cu./FRLSZH Cable; 95mm2 Cu./FRLSZH Cable; 120mm2 Cu./FRLSZH Cable; 30KVA, 400V, 3PH, 60Hz UPS; CB-UPS-01 panel; Supply, install and connection of a SCADA server cum workstation complete with network rack, network switch, sensors, printer, armoured cables with cable tray & conduits, level transmitter, liquid flow meter, quality sensor (COD,BOD,pH), pressure transmit; Fire Alarm Control panel with fire alarm zoning with Mimic panel with fire alarm zoning; Supply, install to site and installation of the Aspirating Smoke Detector complete with accessories and pipes; Supply, install to site and installation of the addressable manual call point with operation safety glass breaking and pushbutton; Supply, install to site and installation of the photoelectric smoke detector with base; Supply, install to site and installation of the heat detector with base; Supply, install to site and installation of multi criteria sensors with base; Supply, install to site and installation of Hydrogen detector; Supply, install to site and installation of Duct detector; Sounder With Beacon; Remote LED Indicator; Single Channel Interface Module; Addressable Control module for Sounders; Addressable relay module for interface; Addressable monitor module for interface; Supply, install to site and installation Fire loop cable; Supply, install to site and installation of power cable; Fire Fighter’s Telephone Centre; Fireman’s Telephone Jack; Voice Command Center; DACT (Auto - Dailer) for 24x7 Civil Defence; Transmission Communication cable - Fiber Optics; Transmission Communication cable - Ethernet Cable; Supply, install to site and installation of power supply system for fire alarm control panel; acoustical tiles suspended ceiling 600x600mm concealed metal; physical units [237.61 h] |
| SL | **Sewage Pump Stations** | 2026-12-17 → 2026-10-26 (-52d) | 2027-01-02 → 2026-12-12 (-21d) |  |  |  |
| PRO-SPS-CV-DL-10 | Material Delivery & Site Inspection for Works for Pump Station | 2026-12-17 → 2026-10-26 A (-52d) | 2027-01-02 → 2026-12-12 (-21d) | 0% → 86% | none → -52d | resources 100 mm thickness lean concrete under the foundation; Foundation; Walls; Beams; Slabs; Lightweight Concrete Roof insulation as per Architect's specification; 2 perpendicular layers of cold bitumen coats; 2 layer of 4mm HDPE membrane, 2 perpendicular layers cold bitumen coats; 1 layer EPOXY Paint 300 micron; Membrane fully bonded to prime deck and upstand; Geotextile Filter membrane uv resistance; 85mm thick thermal insulation; 1.5mm thick epdm waterproofing membrane; Supply and install External plastering to walls and columns min. 15mm thick with cement mortar of specified grade including galvanized mesh, corner beads, angle beads, CE bonds to rough and smooth plaster complete the work as per drawing & specification.; Supply and install 2 coats of weatherproof paint at walls including one prime coat and two coats and putty to give smooth Surface as a base for paint including fiberglass tape to joints and all other accessories as per manufacturers approved specification; Supply and install internal plastering to walls and columns min. 15mm thick with cement mortar of specified grade including galvanized mesh, corner beads, angle beads, CE bonds to rough and smooth plaster complete the work as per drawing & specification.; Supply and install 300*300mm glazed ceramic wall tiles on cement mortar and including rough and smooth plaster, galvanized mesh, corner beads, angle beads, CE bonds → 100 mm thickness lean concrete under the foundation; Foundation; Walls; Beams; Slabs; Lightweight Concrete Roof insulation as per Architect's specification; 2 perpendicular layers of cold bitumen coats; 2 layer of 4mm HDPE membrane, 2 perpendicular layers cold bitumen coats; 1 layer EPOXY Paint 300 micron; Membrane fully bonded to prime deck and upstand; Geotextile Filter membrane uv resistance; 85mm thick thermal insulation; 1.5mm thick epdm waterproofing membrane; Supply and install External plastering to walls and columns min. 15mm thick with cement mortar of specified grade including galvanized mesh, corner beads, angle beads, CE bonds to rough and smooth plaster complete the work as per drawing & specification.; Supply and install 2 coats of weatherproof paint at walls including one prime coat and two coats and putty to give smooth Surface as a base for paint including fiberglass tape to joints and all other accessories as per manufacturers approved specification; Supply and install internal plastering to walls and columns min. 15mm thick with cement mortar of specified grade including galvanized mesh, corner beads, angle beads, CE bonds to rough and smooth plaster complete the work as per drawing & specification.; Supply and install 300*300mm glazed ceramic wall tiles on cement mortar and including rough and smooth plaster, galvanized mesh, corner beads, angle beads, CE bonds; physical units [237.61 h] |
| SL12 | **Gaurd Room** | 2026-12-17 → 2026-12-12 (-5d) | 2027-01-02 → 2026-12-27 (-6d) |  |  |  |
| PRO-GR-CV-DL-70 | Material Delivery & Site Inspection for Materials for Gaurd Room | 2026-12-17 → 2026-12-12 (-5d) | 2027-01-02 → 2026-12-27 (-6d) |  | none → -53d | resources 100 mm thickness lean concrete under the foundation; Foundation; Slab on Grade; Beams; Columns; Slabs; Lightweight Concrete Roof insulation as per Architect's specification; Insulated brickwork. with expanded polystyrene 200mm thick; vertical straight wall complete with accessories .; Common brickwork. 150mm thick; vertical straight wall complete with accessories.; Two Layers of Bituminous Coating; CW01 - 1000 mm width x 2000 mm height; CW02 - 2000 mm width x 2000 mm height; D2 - 900 mm x 2200 mm height temper door; Supply and install 50mm thick random cut stone cladding complete with 600mm x 50mm thick coping, necessary framings, slotted anchor connection, steel tube framing, aluminum angles all necessary fittings & accessories as per manufacturer's detail & archite; Supply and install 300*300mm terrazzo tiles with 150mm high skirting at perimeter with approved quality on 30 mm mortar including sand fill material as approved by the Client (For Roof); Supply and install 300*300mm glazed ceramic wall tiles on cement mortar and including rough and smooth plaster, galvanized mesh, corner beads, angle beads, CE bonds (For Toilets); Supply and install internal plastering and 2 coats of acrylic paint at walls including one coat of primer & two coats of putty to give smooth finish; Supply and install 600*600mm porcelain tiles with approved quality on 30 mm mortar including sand fill material as approved by the Client (for Security Area); Supply and install 12.5mm thk, gypsum board suspended ceiling including suspension system, paints as required specification and material as approved by the Client including frames supports, access openings and all other accessories to complete as shown in; Guard room coping 350mm; Guard room coping 450mm; Stone coping 500mm; Stone coping 525mm; Office Chairs; Office Tables; Guard Stand; Supply and install Hand Wash Basin with Water Tap, angle valve, P-trap connected to 50mm diameter sanitary pipe fittings chased to wall.; Supply and install paper towel dispenser, surface mounted, satin finish stainless steel as per approved sample including accessories.; Supply and install mirror, size 460*910mm as per approved sample including frames, backing and all accessories to complete.; Supply and install towel ring , surface mounted, satin finish stainless steel as per approved sample including accessories.; Kitchen sink with single bowl with hot/cold water mixer.; Supply and install Base mounted flush tank water Western water closet system with lid connected to 110mm soil pipe and sanitary tee complete with jointing, angles and bent below floor slab to drainage system; Gate Valves; Slow Closing Valve; 1 meter length 10mm diameter Flexible Hose with insulated handle complete with fork support, index push, vacuum breaker; 50mm diameter; 75mm diameter; 80mm diameter; 100mm diameter; 110mm diameter; 13mm diameter; 15mm diameter; 20mm diameter; 25mm diameter; 32mm diameter; Isolation Valve Size 20; Isolation Valve Size 25; Isolation Valve Size 32; Isolation Valve Size 50; 20 mm diameter spray head for cold water supply; Supply and install Electric Water Heater set with connection; Water meter complete with accessories.; Roof drain; Vent on a roof to exhaust air; 300 X 300 mm Gully trap; inspection chamber, size 800x900x1000; 900mm x 800mm Pressure break chamber; Floor cleanout, size 75 mm diameter; Floor cleanout, size 110 mm diameter; GRP water tanks capacity of each 1000 liter complete with all fittings, all valves and concrete pad; Mini split actual capacity 2 Ton; Supply, fabricate, install and testing factory fabricated metal ducts with flanges complete with supports, vanes, dampers, links, levers and quadrants etc. as per specifications. It shall include all materials of the duct and supporting arrangement comple; Supplying, installation testing & commissioning of external insulation on ducts; Supply, fix, testing and commissioning of exhaust air/fresh air louvers of powder coated extruded aluminium construction.; Providing, fixing, testing and commissioning of powder coated extruded aluminum sections grills and diffusers with dampers.; Supply, Installation & Testing of 2 hours Fire rated system for closing the openings between rooms with help of Rock wool, G.I Sheet and Hilti or equivalent Sealants( Qty measured will be the size of opening). Item Properties shall be quoted as per techni; 4.5 KG CO2 Type Fire Extinguishers; 6 KG ABC Type Fire Extinguishers; Junction Box for lighting fixture; Trench excavation to receive 2 nos 50mm diameter PVC Conduit, sand bedding and embedded with sand encasement and backfilling with excavated material complete with warning tape at approved depth; Supply, Install, fixings, testing and commissioning 80W LED Projector waterproof DJ effect light including customized project image features complete with mounting system specification to Engineer's approval.; Earth Pit; Grounding rod 20mmX3m; Grounding rod with Pit 20mmX3m; Earthing Bar; 120mm2 Tinned copper wire; Guard Room 1; Guard Room 2; Guard Room 3; 30A, 2P AC Disconnect Switch; 20A Duplex Receptacle Floor Mounted; Twin Socket outlet; Twin Socket outlet, Weather Proof; Single gang Lighting switch; 36W LED linear Pendant lighting; 36W LED Emergency linear Pendant lighting; 13W recess mounted LED down light fitting; 13W recess emergency mounted LED down light fitting with 1.5 Hr Battery; 10.4W LED Exit light with 1.5 Hr Battery; 4mm2 Cu./FRLSZH Cable; 6mm2 Cu./FRLSZH Cable; Fire Alarm Control panel with fire alarm zoning with Mimic panel with fire alarm zoning; Main Fire Alarm Control panel with fire alarm zoning with Mimic panel with fire alarm zoning; Supply and installation of the addressable manual call point with operation safety glass breaking and pushbutton; Supply and installation of the photoelectric heat & smoke detector with base; Sounder With Beacon; Addressable Control module for Sounders; Addressable Control module for HVAC System; Addressable Monitor module for HVAC System; 2C x 1.5 Sqm FR Rated Armored - Cable For Loop Wiring; DACT (Auto - Dailer) for 24x7 Civil Defence; Transmission Communication cable - Fiber Optics 12Core; Transmission Communication cable - Ethernet Cable; Supply, install to site and installation of power supply system for fire alarm control panel; Supply, install to site and installation of power cable; Fire Fighter’s Telephone Centre; Fireman’s Telephone Jack; Voice Command Center → 100 mm thickness lean concrete under the foundation; Foundation; Slab on Grade; Beams; Columns; Slabs; Lightweight Concrete Roof insulation as per Architect's specification; Insulated brickwork. with expanded polystyrene 200mm thick; vertical straight wall complete with accessories .; Common brickwork. 150mm thick; vertical straight wall complete with accessories.; Two Layers of Bituminous Coating; CW01 - 1000 mm width x 2000 mm height; CW02 - 2000 mm width x 2000 mm height; D2 - 900 mm x 2200 mm height temper door; Supply and install 50mm thick random cut stone cladding complete with 600mm x 50mm thick coping, necessary framings, slotted anchor connection, steel tube framing, aluminum angles all necessary fittings & accessories as per manufacturer's detail & archite; Supply and install 300*300mm terrazzo tiles with 150mm high skirting at perimeter with approved quality on 30 mm mortar including sand fill material as approved by the Client (For Roof); Supply and install 300*300mm glazed ceramic wall tiles on cement mortar and including rough and smooth plaster, galvanized mesh, corner beads, angle beads, CE bonds (For Toilets); Supply and install internal plastering and 2 coats of acrylic paint at walls including one coat of primer & two coats of putty to give smooth finish; Supply and install 600*600mm porcelain tiles with approved quality on 30 mm mortar including sand fill material as approved by the Client (for Security Area); Supply and install 12.5mm thk, gypsum board suspended ceiling including suspension system, paints as required specification and material as approved by the Client including frames supports, access openings and all other accessories to complete as shown in; Guard room coping 350mm; Guard room coping 450mm; Stone coping 500mm; Stone coping 525mm; Office Chairs; Office Tables; Guard Stand; Supply and install Hand Wash Basin with Water Tap, angle valve, P-trap connected to 50mm diameter sanitary pipe fittings chased to wall.; Supply and install paper towel dispenser, surface mounted, satin finish stainless steel as per approved sample including accessories.; Supply and install mirror, size 460*910mm as per approved sample including frames, backing and all accessories to complete.; Supply and install towel ring , surface mounted, satin finish stainless steel as per approved sample including accessories.; Kitchen sink with single bowl with hot/cold water mixer.; Supply and install Base mounted flush tank water Western water closet system with lid connected to 110mm soil pipe and sanitary tee complete with jointing, angles and bent below floor slab to drainage system; Gate Valves; Slow Closing Valve; 1 meter length 10mm diameter Flexible Hose with insulated handle complete with fork support, index push, vacuum breaker; 50mm diameter; 75mm diameter; 80mm diameter; 100mm diameter; 110mm diameter; 13mm diameter; 15mm diameter; 20mm diameter; 25mm diameter; 32mm diameter; Isolation Valve Size 20; Isolation Valve Size 25; Isolation Valve Size 32; Isolation Valve Size 50; 20 mm diameter spray head for cold water supply; Supply and install Electric Water Heater set with connection; Water meter complete with accessories.; Roof drain; Vent on a roof to exhaust air; 300 X 300 mm Gully trap; inspection chamber, size 800x900x1000; 900mm x 800mm Pressure break chamber; Floor cleanout, size 75 mm diameter; Floor cleanout, size 110 mm diameter; GRP water tanks capacity of each 1000 liter complete with all fittings, all valves and concrete pad; Mini split actual capacity 2 Ton; Supply, fabricate, install and testing factory fabricated metal ducts with flanges complete with supports, vanes, dampers, links, levers and quadrants etc. as per specifications. It shall include all materials of the duct and supporting arrangement comple; Supplying, installation testing & commissioning of external insulation on ducts; Supply, fix, testing and commissioning of exhaust air/fresh air louvers of powder coated extruded aluminium construction.; Providing, fixing, testing and commissioning of powder coated extruded aluminum sections grills and diffusers with dampers.; Supply, Installation & Testing of 2 hours Fire rated system for closing the openings between rooms with help of Rock wool, G.I Sheet and Hilti or equivalent Sealants( Qty measured will be the size of opening). Item Properties shall be quoted as per techni; 4.5 KG CO2 Type Fire Extinguishers; 6 KG ABC Type Fire Extinguishers; Junction Box for lighting fixture; Trench excavation to receive 2 nos 50mm diameter PVC Conduit, sand bedding and embedded with sand encasement and backfilling with excavated material complete with warning tape at approved depth; Supply, Install, fixings, testing and commissioning 80W LED Projector waterproof DJ effect light including customized project image features complete with mounting system specification to Engineer's approval.; Earth Pit; Grounding rod 20mmX3m; Grounding rod with Pit 20mmX3m; Earthing Bar; 120mm2 Tinned copper wire; Guard Room 1; Guard Room 2; Guard Room 3; 30A, 2P AC Disconnect Switch; 20A Duplex Receptacle Floor Mounted; Twin Socket outlet; Twin Socket outlet, Weather Proof; Single gang Lighting switch; 36W LED linear Pendant lighting; 36W LED Emergency linear Pendant lighting; 13W recess mounted LED down light fitting; 13W recess emergency mounted LED down light fitting with 1.5 Hr Battery; 10.4W LED Exit light with 1.5 Hr Battery; 4mm2 Cu./FRLSZH Cable; 6mm2 Cu./FRLSZH Cable; Fire Alarm Control panel with fire alarm zoning with Mimic panel with fire alarm zoning; Main Fire Alarm Control panel with fire alarm zoning with Mimic panel with fire alarm zoning; Supply and installation of the addressable manual call point with operation safety glass breaking and pushbutton; Supply and installation of the photoelectric heat & smoke detector with base; Sounder With Beacon; Addressable Control module for Sounders; Addressable Control module for HVAC System; Addressable Monitor module for HVAC System; 2C x 1.5 Sqm FR Rated Armored - Cable For Loop Wiring; DACT (Auto - Dailer) for 24x7 Civil Defence; Transmission Communication cable - Fiber Optics 12Core; Transmission Communication cable - Ethernet Cable; Supply, install to site and installation of power supply system for fire alarm control panel; Supply, install to site and installation of power cable; Fire Fighter’s Telephone Centre; Fireman’s Telephone Jack; Voice Command Center; physical units [237.61 h] |
| SL121 | **Boundary Fence** | 2026-12-17 → 2026-10-28 (-50d) | 2027-01-02 → 2026-12-17 (-16d) |  |  |  |
| PRO-FE-CV-DL-80 | Material Delivery & Site Inspection for Materials for Boundary Fence | 2026-12-17 → 2026-10-28 A (-50d) | 2027-01-02 → 2026-12-17 (-16d) | 0% → 57% | none → -53d | resources 100 mm thickness lean concrete under the foundation; Foundation; Walls; Beams; Columns; Common brickwork. 300mm thick; vertical straight wall complete with accessories.; Two Layers of Bituminous Coating; 20x20 Approved Polysulfide Joint Sealant; 2 perpendicular layers of cold bitumen coats; 2 layer of 4mm HDPE membrane, 2 perpendicular layers cold bitumen coats; 1 layer EPOXY Paint 300 micron; Membrane fully bonded to prime deck and upstand; Geotextile Filter membrane uv resistance; 85mm thick thermal insulation; 1.5mm thick epdm waterproofing membrane; Supply and install 33mm thick Lexan cladding blue complete with necessary framings & accessories all as per manufacturer's & architectural drawing.; Supply and install 50mm thick random cut stone cladding complete with 600mm x 50mm thick coping, necessary framings, slotted anchor connection, steel tube framing, aluminum angles all necessary fittings & accessories as per manufacturer's detail & archite; Supply and install External plastering to walls and columns min. 15mm thick with cement mortar of specified grade including galvanized mesh, corner beads, angle beads, CE bonds to rough and smooth plaster complete the work as per drawing & specification.; Supply and install 2 coats of weatherproof paint at walls including one prime coat and two coats and putty to give smooth Surface as a base for paint including fiberglass tape to joints and all other accessories as per manufacturers approved specification; Supply and install MODON Signage with Logo Type 1; Supply and install MODON Signage Type 2; Supply and install "Triangle Style" signage; Magnetic Control Access barrier, Automatic Vehicular Barriers to be installed on ground with magnetic access; Trench excavation to receive 2 nos 50mm diameter PVC Conduit, sand bedding and embedded with sand encasement and backfilling with excavated material complete with warning tape at approved depth; IR Intrusion Detection System Quad Beams (Tx & Rx) (SL-350 QDM); Control cable; CAT6A cable; Field Equipment Cabinet enclosed outdoor complete with precast concrete footing, suitable for parameter security and weather proof to the local enviroment. Not less than IP66 and IK rating.; Supply and install 800mm x 800mm x 800mm height concrete handhole with bituminous paint all around, 690mm x 690mm handhold cover and sump cover.; including pit excavation; 800mm depth minimum Trench excavation to receive 3 nos 50mm diameter PVC Conduit with spacer, sand bedding and embedded with sand encasement and backfill with excavated material well compacted complete with warning tape; Hot dipped galvanized cable conduits for CAT6A cable and Control Cables embedded to wall; 8 Port Industrial PoE Switch 10/100BaseT (0 deg to +70 deg. Celsius); 06C Optical Fiber SM; 48C Optical Fiber SM; 48 Core Splice Closure; Boom Barrier at Security Guard Room; Pedestrian turnstile at Security Guard Room; Access Control Unit; Access Card Reader; Magnetic Lock; Break Glass; Exit Push button; Door Sensor; Biometrics Reader; Pole/Bollard mounted IP( PoE), Automatic Number Plate Recognition (ANPR, camera, 5MP,IP 66, IR illumination, 3-8mm varifocal, auto iris lens type price include the Bollard/pole); 12U rack dimension (W x H x L) 600 x 625 x 600 mm; 4C-16mm2 CU/XLPE/PVC direct buried armored cable; 4C-10mm2 CU/XLPE/PVC direct buried armored cable; 16mm2 CU/PVC wire; 10mm2 CU/PVC wire; 400V, 3PH, 60Hz lighting control panel (LCP-02); 38W, 230V, 1PH, 60Hz fence, led linear uplight lighting, IP66 → 100 mm thickness lean concrete under the foundation; Foundation; Walls; Beams; Columns; Common brickwork. 300mm thick; vertical straight wall complete with accessories.; Two Layers of Bituminous Coating; 20x20 Approved Polysulfide Joint Sealant; 2 perpendicular layers of cold bitumen coats; 2 layer of 4mm HDPE membrane, 2 perpendicular layers cold bitumen coats; 1 layer EPOXY Paint 300 micron; Membrane fully bonded to prime deck and upstand; Geotextile Filter membrane uv resistance; 85mm thick thermal insulation; 1.5mm thick epdm waterproofing membrane; Supply and install 33mm thick Lexan cladding blue complete with necessary framings & accessories all as per manufacturer's & architectural drawing.; Supply and install 50mm thick random cut stone cladding complete with 600mm x 50mm thick coping, necessary framings, slotted anchor connection, steel tube framing, aluminum angles all necessary fittings & accessories as per manufacturer's detail & archite; Supply and install External plastering to walls and columns min. 15mm thick with cement mortar of specified grade including galvanized mesh, corner beads, angle beads, CE bonds to rough and smooth plaster complete the work as per drawing & specification.; Supply and install 2 coats of weatherproof paint at walls including one prime coat and two coats and putty to give smooth Surface as a base for paint including fiberglass tape to joints and all other accessories as per manufacturers approved specification; Supply and install MODON Signage with Logo Type 1; Supply and install MODON Signage Type 2; Supply and install "Triangle Style" signage; Magnetic Control Access barrier, Automatic Vehicular Barriers to be installed on ground with magnetic access; Trench excavation to receive 2 nos 50mm diameter PVC Conduit, sand bedding and embedded with sand encasement and backfilling with excavated material complete with warning tape at approved depth; IR Intrusion Detection System Quad Beams (Tx & Rx) (SL-350 QDM); Control cable; CAT6A cable; Field Equipment Cabinet enclosed outdoor complete with precast concrete footing, suitable for parameter security and weather proof to the local enviroment. Not less than IP66 and IK rating.; Supply and install 800mm x 800mm x 800mm height concrete handhole with bituminous paint all around, 690mm x 690mm handhold cover and sump cover.; including pit excavation; 800mm depth minimum Trench excavation to receive 3 nos 50mm diameter PVC Conduit with spacer, sand bedding and embedded with sand encasement and backfill with excavated material well compacted complete with warning tape; Hot dipped galvanized cable conduits for CAT6A cable and Control Cables embedded to wall; 8 Port Industrial PoE Switch 10/100BaseT (0 deg to +70 deg. Celsius); 06C Optical Fiber SM; 48C Optical Fiber SM; 48 Core Splice Closure; Boom Barrier at Security Guard Room; Pedestrian turnstile at Security Guard Room; Access Control Unit; Access Card Reader; Magnetic Lock; Break Glass; Exit Push button; Door Sensor; Biometrics Reader; Pole/Bollard mounted IP( PoE), Automatic Number Plate Recognition (ANPR, camera, 5MP,IP 66, IR illumination, 3-8mm varifocal, auto iris lens type price include the Bollard/pole); 12U rack dimension (W x H x L) 600 x 625 x 600 mm; 4C-16mm2 CU/XLPE/PVC direct buried armored cable; 4C-10mm2 CU/XLPE/PVC direct buried armored cable; 16mm2 CU/PVC wire; 10mm2 CU/PVC wire; 400V, 3PH, 60Hz lighting control panel (LCP-02); 38W, 230V, 1PH, 60Hz fence, led linear uplight lighting, IP66; physical units [237.61 h] |
| IR1 | **Softscape and Planting Works** | 2026-11-18 → 2026-11-25 (+7d) | 2027-03-04 → 2027-03-15 (+11d) |  |  |  |
| PO | **Issuance of Purchase Orders** | 2026-11-18 → 2026-11-25 (+7d) | 2026-12-01 → 2026-12-08 (+7d) |  |  |  |
| 1 | **Main Line Pipes** | 2026-11-18 → 2026-11-25 (+7d) | 2026-12-01 → 2026-12-08 (+7d) |  |  |  |
| PRO-IR-PO-140 | Issuance of Purchase Order for Softscape and Planting Works | 2026-11-18 → 2026-11-25 (+7d) | 2026-11-24 → 2026-12-01 (+7d) |  | none → -113d | resources none → physical units [101.83 h] |
| PRO-IR-PO-150 | Issuance of Purchase Order for Site Furnishings (Seating Bench,Stone Boulders and Gravel) | 2026-11-25 → 2026-12-02 (+7d) | 2026-12-01 → 2026-12-08 (+7d) |  | none → -103d | resources none → physical units [101.83 h] |
| MF | **Manufacturing of Material** | 2026-11-25 → 2026-12-02 (+7d) | 2027-02-09 → 2027-02-16 (+7d) |  |  |  |
| 1 | **Main Line Pipes** | 2026-11-25 → 2026-12-02 (+7d) | 2027-02-09 → 2027-02-16 (+7d) |  |  |  |
| PRO-IR-MF-140 | Manufacturing of Softscape and Planting Works | 2026-11-25 → 2026-12-02 (+7d) | 2027-02-02 → 2027-02-09 (+7d) |  | none → -113d | resources none → physical units [1018.34 h] |
| PRO-IR-MF-150 | Manufacturing of Valves for Site Furnishings (Seating Bench,Stone Boulders and Gravel) | 2026-12-02 → 2026-12-09 (+7d) | 2027-02-09 → 2027-02-16 (+7d) |  | none → -103d | resources none → physical units [1018.34 h] |
| 1DL | **1st Material Delivery & Site Inspection** | 2027-02-03 → 2027-02-10 (+7d) | 2027-02-16 → 2027-02-23 (+7d) |  |  |  |
| 1 | **Main Line Pipes** | 2027-02-03 → 2027-02-10 (+7d) | 2027-02-16 → 2027-02-23 (+7d) |  |  |  |
| PRO-IR-1DL-140 | 1ST Material Delivery for Softscape and Planting Works | 2027-02-03 → 2027-02-10 (+7d) | 2027-02-09 → 2027-02-16 (+7d) |  | none → -113d | resources none → physical units [101.83 h] |
| PRO-IR-1DL-150 | 1ST Material Delivery for Site Furnishings (Seating Bench,Stone Boulders and Gravel) | 2027-02-10 → 2027-02-17 (+7d) | 2027-02-16 → 2027-02-23 (+7d) |  | none → -103d | resources none → physical units [101.83 h] |
| DL | **Material Delivery & Site Inspection** | 2027-02-10 → 2027-02-17 (+7d) | 2027-03-04 → 2027-03-15 (+11d) |  |  |  |
| 1 | **Main Line Pipes** | 2027-02-10 → 2027-02-17 (+7d) | 2027-03-04 → 2027-03-15 (+11d) |  |  |  |
| PRO-R25-IR-DL-140 | Material Delivery & Site Inspection of Softscape and Planting Works | 2027-02-10 → 2027-02-17 (+7d) | 2027-02-21 → 2027-02-28 (+7d) |  | none → -113d | resources Neem Tree, T01 Tree; Cassia Glauca Tree, T02 Tree; Ponciana Tree, T03 Tree; Dodonaea Viscosa, S01 Shrubs 400-500mm, 4plant/m2; Vitex Angus-Cactus, S02 Shrubs 400-500mm, 5plant/m2; Pennisetum Rubrum , S03 Shrubs 400-500mm, 5plant/m2; sesuvium portulacastrum green carpet, GC01 Ground Cover; Catharanthus Roseus 150-200mm, GC02 Ground Cover → Neem Tree, T01 Tree; Cassia Glauca Tree, T02 Tree; Ponciana Tree, T03 Tree; Dodonaea Viscosa, S01 Shrubs 400-500mm, 4plant/m2; Vitex Angus-Cactus, S02 Shrubs 400-500mm, 5plant/m2; Pennisetum Rubrum , S03 Shrubs 400-500mm, 5plant/m2; sesuvium portulacastrum green carpet, GC01 Ground Cover; Catharanthus Roseus 150-200mm, GC02 Ground Cover; physical units [169.72 h] |
| PRO-R25-IR-DL-150 | Material Delivery & Site Inspection of Site Furnishings (Seating Bench,Stone Boulders and Gravel) | 2027-02-22 → 2027-03-01 (+7d) | 2027-03-04 → 2027-03-15 (+11d) |  | none → -107d | resources Seating Bench; Riyadh Stone Boulders 450mm thick; Gravel Mulch 150mm Beige; Gravel Mulch 150mm White; Gravel Ponds Bed - MARL MIX 500-600mm; Trash/ Recycle Bins → Seating Bench; Riyadh Stone Boulders 450mm thick; Gravel Mulch 150mm Beige; Gravel Mulch 150mm White; Gravel Ponds Bed - MARL MIX 500-600mm; Trash/ Recycle Bins; physical units [169.72 h] |
| LL | **Long Lead Time Items** | 2026-11-18 → 2026-09-01 (-78d) | 2027-06-27 → 2027-06-30 (+3d) |  |  |  |
| 1 | **Superstructure Works** | 2026-11-18 → 2026-09-01 (-78d) | 2027-06-27 → 2027-06-30 (+3d) |  |  |  |
| SL | **Sewage Pump Station** | 2026-11-18 → 2026-09-01 (-78d) | 2027-05-13 → 2027-01-13 (-120d) |  |  |  |
| 1 | **Issuance of Purchase Orders** | 2026-11-18 → 2026-09-01 (-78d) | 2026-11-24 → 2026-09-03 (-82d) |  |  |  |
| PRO-SPS-LL-PO-10 | Issuance of Purchase Order for Electromechanical Works for Pump Station | 2026-11-18 → 2026-09-01 A (-78d) | 2026-11-24 → 2026-09-03 A (-82d) | 0% → 100% |  | resources none → physical units [101.83 h] |
| 2 | **Manufacturing of Material** | 2026-11-25 → 2026-09-05 (-81d) | 2027-03-24 → 2026-11-02 (-142d) |  |  |  |
| PRO-SPS-LL-MF-10 | Manufacturing of Electromechanical Works for Pump Station | 2026-11-25 → 2026-09-05 A (-81d) | 2027-03-24 → 2026-11-02 A (-142d) | 0% → 100% |  | resources none → physical units [1697.23 h] |
| 3 | **Material Shipping/Custom Clearance/Delivery** | 2027-03-25 → 2026-11-25 (-120d) | 2027-04-18 → 2026-12-19 (-120d) |  |  |  |
| PRO-SPS-LL-SH/DL-10 | Material Delivery for Electromechanical Works for Pump Station | 2027-03-25 → 2026-11-25 (-120d) | 2027-04-18 → 2026-12-19 (-120d) |  | none → -12d | resources none → physical units [356.42 h] |
| 4 | **Material Site Inspection** | 2027-04-19 → 2026-12-20 (-120d) | 2027-05-13 → 2027-01-13 (-120d) |  |  |  |
| PRO-SPS-LL-MSI-10 | Material Site Inspection for Electromechanical Works for Pump Station | 2027-04-19 → 2026-12-20 (-120d) | 2027-05-13 → 2027-01-13 (-120d) |  | none → -12d | resources none → physical units [373.39 h] |
| SL1 | **Water Pump Station** | 2026-11-25 → 2026-09-01 (-85d) | 2027-04-15 → 2027-01-12 (-93d) |  |  |  |
| 1 | **Issuance of Purchase Orders** | 2026-11-25 → 2026-09-01 (-85d) | 2026-12-02 → 2026-09-03 (-90d) |  |  |  |
| PRO-LS-LL-PO-20 | Issuance of Purchase Order for Electromechanical Works for Water Pump Station | 2026-11-25 → 2026-09-01 A (-85d) | 2026-12-02 → 2026-09-03 A (-90d) | 0% → 100% |  | resources none → physical units [118.81 h] |
| 2 | **Manufacturing of Material** | 2026-12-03 → 2026-09-06 (-88d) | 2027-02-22 → 2026-11-02 (-112d) |  |  |  |
| PRO-LS-LL-MF-20 | Manufacturing of Electromechanical Works for Water Pump Station | 2026-12-03 → 2026-09-06 A (-88d) | 2027-02-22 → 2026-11-02 A (-112d) | 0% → 100% |  | resources none → physical units [1188.06 h] |
| 3 | **Material Shipping/Custom Clearance/Delivery** | 2027-02-23 → 2026-11-25 (-90d) | 2027-03-22 → 2026-12-19 (-93d) |  |  |  |
| PRO-LS-LL-SH/DL-20 | Material Delivery for Electromechanical Works for Water Pump Station | 2027-02-23 → 2026-11-25 (-90d) | 2027-03-22 → 2026-12-19 (-93d) |  | none → -11d | resources none → physical units [356.42 h] |
| 4 | **Material Site Inspection** | 2027-03-23 → 2026-12-20 (-93d) | 2027-04-15 → 2027-01-12 (-93d) |  |  |  |
| PRO-LS-LL-MSI-20 | Material Site Inspection for Electromechanical Works for Water Pump Station | 2027-03-23 → 2026-12-20 (-93d) | 2027-04-15 → 2027-01-12 (-93d) |  | none → -11d | resources none → physical units [356.42 h] |
| SL2 | **Storage Tank (TSE)** | 2026-12-03 → 2026-12-07 (+4d) | 2027-06-27 → 2027-06-30 (+3d) |  |  |  |
| 1 | **Issuance of Purchase Orders** | 2026-12-03 → 2026-12-07 (+4d) | 2026-12-10 → 2026-12-14 (+4d) |  |  |  |
| PRO-TSE-LL-PO-30 | Issuance of Purchase Order for Electromechanical Works for Storage Tank (TSE) | 2026-12-03 → 2026-12-07 (+4d) | 2026-12-10 → 2026-12-14 (+4d) |  | none → -109d | resources none → physical units [118.81 h] |
| 2 | **Manufacturing of Material** | 2026-12-12 → 2026-12-15 (+3d) | 2027-05-03 → 2027-05-06 (+3d) |  |  |  |
| PRO-TSE-LL-MF-30 | Manufacturing of Electromechanical Works for Storage Tank (TSE) | 2026-12-12 → 2026-12-15 (+3d) | 2027-05-03 → 2027-05-06 (+3d) |  | none → -109d | resources none → physical units [2036.68 h] |
| 3 | **Material Shipping/Custom Clearance/Delivery** | 2027-05-04 → 2027-05-08 (+4d) | 2027-06-02 → 2027-06-06 (+4d) |  |  |  |
| PRO-TSE-LL-SH/DL-30 | Material Delivery for Electromechanical Works for Storage Tank (TSE) | 2027-05-04 → 2027-05-08 (+4d) | 2027-06-02 → 2027-06-06 (+4d) |  | none → -109d | resources none → physical units [356.42 h] |
| 4 | **Material Site Inspection** | 2027-06-03 → 2027-06-07 (+4d) | 2027-06-27 → 2027-06-30 (+3d) |  |  |  |
| PRO-TSE-LL-MSI-30 | Material Site Inspection for Electromechanical Works for Storage Tank (TSE) | 2027-06-03 → 2027-06-07 (+4d) | 2027-06-27 → 2027-06-30 (+3d) |  | none → -109d | resources none → physical units [356.42 h] |
| CON | **Construction Works** |  | 2027-06-30 → 2027-07-05 (+5d) |  |  |  |
| INF | **Infrastructure Networks** |  | 2027-06-28 → 2027-07-05 (+7d) |  |  |  |
| IN | **Internal** |  | 2027-06-28 → 2027-07-05 (+7d) |  |  |  |

| ID | Task | Start | Finish | Complete | Total float | Other |
| --- | --- | --- | --- | --- | --- | --- |
| 1 | **Alignment-RD-01** |  | 2027-06-08 → 2027-06-14 (+6d) |  |  |  |
| EW | **Earthworks** |  | 2027-01-13 → 2027-01-20 (+7d) |  |  |  |
| EW | **Earthworks** |  | 2027-01-13 → 2027-01-20 (+7d) |  |  |  |
| CO-EW-210 | Excavation and Backfilling Works Upto Design Level for Earthworks for Alignment-RD-01(Completed) |  |  |  |  | resources Skilled Labor [907.85 h]; Unskilled Labor [907.85 h]; Dozer [907.85 h]; Water Tanker [907.85 h]; Embankments to the Site and Roads (including Roads , Plots and Pond) [9990.1]; Excavations (including Roads , Plots and Pond) [7253.6] → Skilled Labor [907.85 h]; Unskilled Labor [907.85 h]; Dozer [907.85 h]; Water Tanker [907.85 h]; Excavations (including Roads , Plots and Pond) [7253.6]; Embankments to the Site and Roads (including Roads , Plots and Pond) [9990.1] |
| CO-EW-210_R | Excavation and Backfilling Works Upto Design Level for Earthworks for Alignment-RD-01(Remaining) |  |  |  |  | resources Skilled Labor [66.02 h]; Unskilled Labor [66.02 h]; Dozer [66.02 h]; Water Tanker [66.02 h]; Embankments to the Site and Roads (including Roads , Plots and Pond) [54502]; Excavations (including Roads , Plots and Pond) [527] → Skilled Labor [66.02 h]; Unskilled Labor [66.02 h]; Dozer [66.02 h]; Water Tanker [66.02 h]; Excavations (including Roads , Plots and Pond) [527]; Embankments to the Site and Roads (including Roads , Plots and Pond) [54502] |
| CO-EW-210_R01 | Excavation and Backfilling Works Upto Design Level for Earthworks for Alignment-RD-01(Remaining)-part1 |  | 2027-01-13 → 2027-01-20 (+7d) |  | none → -56d | resources Skilled Labor [594.13 h]; Unskilled Labor [594.13 h]; Dozer [594.13 h]; Water Tanker [594.13 h]; Embankments to the Site and Roads (including Roads , Plots and Pond) [78308.1]; Excavations (including Roads , Plots and Pond) [613] → Skilled Labor [594.13 h]; Unskilled Labor [594.13 h]; Dozer [594.13 h]; Water Tanker [594.13 h]; Excavations (including Roads , Plots and Pond) [613]; Embankments to the Site and Roads (including Roads , Plots and Pond) [78308.1] |
| SD | **Storm Drainage Network** |  | 2027-01-11 → 2026-12-31 (-11d) |  |  |  |
| MH | **Manholes** |  | 2026-12-19 → 2026-11-09 (-40d) |  |  |  |
| CO-SD-MH-230 | Trench Excavation and Bedding Works for Manholes of Storm Drainage Network for Alignment-RD-01 | 2026-11-02 A | 2026-11-15 → 2026-11-08 A (-7d) | 0% → 100% |  |  |
| CO-SD-MH-240 | Install RC Footing Works for Manholes of Storm Drainage Network for Alignment-RD-01 | 2026-11-19 → 2026-11-02 A (-17d) | 2026-11-29 → 2026-11-09 A (-20d) | 0% → 100% |  |  |
| CO-SD-MH-250 | Install RC Wall Rings & Slab Works for Manholes of Storm Drainage Network for Alignment-RD-01 | 2026-11-30 → 2026-11-02 A (-28d) | 2026-12-07 → 2026-11-09 A (-28d) | 0% → 100% |  |  |
| CO-SD-MH-260 | Backfilling Works for Manholes of Storm Drainage Network for Alignment-RD-01 | 2026-12-08 → 2026-11-02 A (-36d) | 2026-12-19 → 2026-11-09 A (-40d) | 0% → 100% |  |  |
| ML | **Main Line Sections** |  | 2026-12-26 → 2026-11-09 (-47d) |  |  |  |
| CO-SD-ML-140 | Trench Excavation and Bedding Works for Main Lines of Storm Drainage Network for Alignment-RD-01 |  | 2026-12-08 → 2026-11-08 A (-30d) | 0% → 100% |  |  |
| CO-SD-ML-150 | Pipes Laying Works for Main Lines of Storm Drainage Network for Alignment-RD-01 |  | 2026-12-16 → 2026-11-09 A (-37d) | 5% → 100% |  |  |
| CO-SD-ML-160 | Trench Backfilling and Compaction Works for Main Lines of Storm Drainage Network for Alignment-RD-01 |  | 2026-12-26 → 2026-11-09 A (-47d) | 0% → 100% |  |  |
| CB | **Catch Basin Sections** | 2026-12-17 → 2026-11-02 (-45d) | 2027-01-11 → 2026-12-31 (-11d) |  |  |  |
| CO-SD-CB-190 | Installation and Pipes Laying Connection Works for Catch Basins of Storm Drainage Network for Alignment-RD-01 | 2026-12-27 → 2026-11-02 A (-55d) | 2027-01-03 → 2026-12-23 (-11d) | 0% → 43% | none → -75d |  |
| CO-SD-CB-200 | Trench Backfilling and Compaction Works for Catch Basins of Storm Drainage Network for Alignment-RD-01 | 2027-01-04 → 2026-11-02 A (-63d) | 2027-01-11 → 2026-12-31 (-11d) | 0% → 43% | none → -75d |  |
| CO-SD-CB-180 | Trench Excavation and Bedding Works for Catch Basins of Storm Drainage Network for Alignment-RD-01 | 2026-12-17 → 2026-11-03 A (-44d) | 2026-12-26 → 2026-12-15 (-11d) | 0% → 43% | none → -75d |  |
| SW | **Sewage Network** |  | 2027-03-06 → 2027-02-14 (-20d) |  |  |  |
| 1 | **Manholes** | 2026-12-27 → 2026-11-02 (-55d) | 2027-03-06 → 2027-02-14 (-20d) |  |  |  |
| CO-SW-MH-210 | Excavation Works for Main Line Manholes of Sewage Network for Alignment-RD-01 | 2026-12-27 → 2026-11-02 A (-55d) | 2027-01-09 → 2026-12-20 (-20d) | 0% → 50% | none → -91d |  |
| CO-SW-MH-220 | Installation RC Footing Works for Main Line Manholes of Sewage Network for Alignment-RD-01 | 2027-01-10 → 2026-11-02 A (-69d) | 2027-01-23 → 2027-01-03 (-20d) | 0% → 50% | none → -91d |  |
| CO-SW-MH-230 | Install Grp Liner Wall Works for Main Line Manholes of Sewage Network for Alignment-RD-01 | 2027-01-24 → 2026-11-02 A (-83d) | 2027-02-06 → 2027-01-17 (-20d) | 0% → 50% | none → -91d |  |
| CO-SW-MH-240 | Pouring Grp Liner Wall Works for Main Line Manholes of Sewage Network for Alignment-RD-01 | 2027-02-07 → 2026-11-02 A (-97d) | 2027-02-20 → 2027-01-31 (-20d) | 0% → 50% | none → -91d |  |
| CO-SW-MH-250 | Backfilling Works for Main Line Manholes of Sewage Network for Alignment-RD-01 | 2027-02-21 → 2026-11-02 A (-111d) | 2027-03-06 → 2027-02-14 (-20d) | 0% → 50% | none → -91d |  |
| ML | **Main Line Sections** |  | 2027-03-06 → 2027-02-14 (-20d) |  |  |  |
| CO-SW-ML-140 | Trench Excavation and Bedding Works for Main Lines of Sewage Network for Alignment-RD-01 |  | 2027-01-20 → 2027-01-10 (-10d) | 20% → 50% | none → -75d |  |
| CO-SW-ML-150 | Pipes Laying Works for Main Lines of Sewage Network for Alignment-RD-01 |  | 2027-01-30 → 2027-01-19 (-11d) | 20% → 50% | none → -75d |  |
| CO-SW-ML-160 | Trench Backfilling and Compaction Works for Main Lines of Sewage Network for Alignment-RD-01 |  | 2027-03-06 → 2027-02-14 (-20d) | 20% → 50% | none → -91d |  |
| TSE | **Treated Sewage Effluent (Tse)** | 2026-12-20 → 2026-11-09 (-41d) | 2027-02-06 → 2027-02-13 (+7d) |  |  |  |
| CO-TSE-ML-200 | Trench Excavation and Bedding Works for Main Lines of Treated Sewage Effluent (Tse) for Alignment-RD-01 | 2026-12-20 → 2026-11-09 (-41d) | 2026-12-27 → 2026-11-16 (-41d) |  | none → -55d |  |
| CO-TSE-ML-210 | Pipes Laying Works for Main Lines of Treated Sewage Effluent (Tse) for Alignment-RD-01 | 2027-01-02 → 2027-01-09 (+7d) | 2027-01-20 → 2027-01-27 (+7d) |  | none → -100d |  |
| CO-TSE-ML-230 | Trench Backfilling and Compaction Works for Treated Sewage Effluent (Tse) for Alignment-RD-01 | 2027-01-21 → 2027-01-28 (+7d) | 2027-02-06 → 2027-02-13 (+7d) |  | none → -100d |  |
| PW | **Potable Water Network** | 2026-12-20 → 2026-11-09 (-41d) | 2027-01-25 → 2027-02-01 (+7d) |  |  |  |
| ML | **Main Line Sections** | 2026-12-20 → 2026-11-09 (-41d) | 2027-01-25 → 2027-02-01 (+7d) |  |  |  |
| CO-PW-ML-140 | Trench Excavation and Bedding Works for Main Lines of Potable Water Network for Alignment-RD-01 | 2026-12-20 → 2026-11-09 (-41d) | 2026-12-26 → 2026-11-15 (-41d) |  | none → -41d |  |
| CO-PW-ML-150 | Pipes Laying and accessories for Main Lines of Potable Water Network for Alignment-RD-01 | 2027-01-12 → 2027-01-19 (+7d) | 2027-01-18 → 2027-01-25 (+7d) |  | none → -90d |  |
| CO-PW-ML-160 | Trench Backfilling and Compaction Works for Main Lines of Potable Water Network for Alignment-RD-01 | 2027-01-19 → 2027-01-26 (+7d) | 2027-01-25 → 2027-02-01 (+7d) |  | none → -90d |  |
| VC | **Valve Chamber** | 2026-12-22 → 2026-11-11 (-41d) | 2027-01-25 → 2027-02-01 (+7d) |  |  |  |
| CO-PW-VC-230 | Excavation Works for Main Line Valves and Valve Chambers of Potable Water Network for Alignment-RD-01 | 2026-12-22 → 2026-11-11 (-41d) | 2026-12-26 → 2026-11-15 (-41d) |  | none → -41d |  |
| CO-PW-VC190 | Installation of Valve Chambers of Potable Water Network for Alignment-RD-01 | 2026-12-27 → 2026-11-16 (-41d) | 2026-12-30 → 2026-11-19 (-41d) |  | none → -35d |  |
| CO-PW-VC-240 | Installation Works for Valves of Potable Water Network for Alignment-RD-01 | 2026-12-31 → 2026-11-21 (-40d) | 2027-01-04 → 2026-11-24 (-41d) |  | none → -35d |  |
| CO-PW-VC-250 | Backfilling Works for Main Line Valves and Valve Chambers of Potable Water Network for Alignment-RD-01 | 2027-01-21 → 2027-01-28 (+7d) | 2027-01-25 → 2027-02-01 (+7d) |  | none → -90d |  |
| FH | **Fire Hydrant** | 2026-12-27 → 2026-11-16 (-41d) | 2027-01-25 → 2027-02-01 (+7d) |  |  |  |
| CO-PW-FH-170 | Excavation Works for Fire Hydrants of Potable Water Network for Alignment-RD-01 | 2026-12-27 → 2026-11-16 (-41d) | 2027-01-12 → 2026-12-02 (-41d) |  | none → -41d |  |
| CO-PW-FH-180 | Installation Works for Fire Hydrant of Potable Water Network for Alignment-RD-01 | 2027-01-19 → 2027-01-26 (+7d) | 2027-01-21 → 2027-01-28 (+7d) |  | none → -87d |  |
| CO-PW-FH-190 | Trench Backfilling and Compaction Works for Fire Hydrants of Potable Water Network for Alignment-RD-01 | 2027-01-23 → 2027-01-30 (+7d) | 2027-01-25 → 2027-02-01 (+7d) |  | none → -80d |  |
| IR | **Irrigation Network** | 2027-02-07 → 2027-02-14 (+7d) | 2027-03-23 → 2027-03-30 (+7d) |  |  |  |
| ML | **Main Line Pipes** | 2027-02-07 → 2027-02-14 (+7d) | 2027-03-23 → 2027-03-30 (+7d) |  |  |  |
| CO-IR-ML-150 | Trench Excavation and Bedding Works for Main Lines of Irrigation Network for Alignment-RD-01 | 2027-02-07 → 2027-02-14 (+7d) | 2027-02-14 → 2027-02-21 (+7d) |  | none → -100d |  |
| CO-IR-ML-160 | Pipes Laying Works for Main Lines of Irrigation Network for Alignment-RD-01 | 2027-02-15 → 2027-02-22 (+7d) | 2027-02-23 → 2027-03-02 (+7d) |  | none → -100d |  |
| CO-IR-ML-170 | Installation Works for Main Line Valves of Irrigation Network for Alignment-RD-01 | 2027-02-24 → 2027-03-03 (+7d) | 2027-03-03 → 2027-03-14 (+11d) |  | none → -100d |  |
| CO-IR-ML-190 | Installation Works for Bulbblers And Sprinklers and Irrigation Control System of Irrigation Network for Alignment-RD-01 | 2027-03-04 → 2027-03-15 (+11d) | 2027-03-18 → 2027-03-25 (+7d) |  | none → -100d |  |
| CO-IR-ML-180 | Trench Backfilling and Compaction Works for Main Lines of Irrigation Network for Alignment-RD-01 | 2027-03-20 → 2027-03-27 (+7d) | 2027-03-23 → 2027-03-30 (+7d) |  | none → -100d |  |
| MV | **Medium Voltage Network** | 2027-03-07 → 2027-02-15 (-20d) | 2027-03-30 → 2027-03-07 (-23d) |  |  |  |
| CW | **Cabling Works** | 2027-03-07 → 2027-02-15 (-20d) | 2027-03-30 → 2027-03-07 (-23d) |  |  |  |
| CO-MV-ML-280 | Trench Excavation and Bedding Works for Medium Voltage Network for Alignment-RD-01 | 2027-03-07 → 2027-02-15 (-20d) | 2027-03-16 → 2027-02-21 (-23d) |  | none → -91d |  |
| CO-MV-ML-290 | Duct Laying Works for Medium Voltage Network for Alignment-RD-01 | 2027-03-17 → 2027-02-22 (-23d) | 2027-03-23 → 2027-02-28 (-23d) |  | none → -91d |  |
| CO-MV-ML-300 | Trench Backfilling and Compaction Works for Medium Voltage Network for Alignment-RD-01 | 2027-03-24 → 2027-03-01 (-23d) | 2027-03-30 → 2027-03-07 (-23d) |  | none → -91d |  |
| LV | **Low Voltage Network** | 2027-03-31 → 2027-03-23 (-8d) | 2027-04-28 → 2027-04-20 (-8d) |  |  |  |
| MLVC | **Main Low Voltage Cables Works ( Cable 300 MM )** | 2027-03-31 → 2027-03-23 (-8d) | 2027-04-20 → 2027-04-12 (-8d) |  |  |  |
| CON-LV-ML-130 | Trench Excavation and Bedding Works for Main Cable of Low Voltage Network for Alignment-RD-01 | 2027-03-31 → 2027-03-23 (-8d) | 2027-04-06 → 2027-03-29 (-8d) |  | none → -101d |  |
| CON-LV-ML-140 | Cable Laying Works for Main Cable of Low Voltage Network for Alignment-RD-01 | 2027-04-07 → 2027-03-30 (-8d) | 2027-04-13 → 2027-04-05 (-8d) |  | none → -101d |  |
| CON-LV-ML-150 | Trench Backfilling and Compaction Works for Main Cable of Low Voltage Network for Alignment-RD-01 | 2027-04-14 → 2027-04-06 (-8d) | 2027-04-20 → 2027-04-12 (-8d) |  | none → -98d |  |
| SLVC | **Service Low Voltage Cables Works ( Cable 70 MM )** | 2027-04-07 → 2027-03-30 (-8d) | 2027-04-28 → 2027-04-20 (-8d) |  |  |  |
| CON-LV-HC-130 | Trench Excavation and Bedding Works for Service Cable of Low Voltage Network for Alignment-RD-01 | 2027-04-07 → 2027-03-30 (-8d) | 2027-04-13 → 2027-04-05 (-8d) |  | none → -99d |  |
| CON-LV-HC-140 | Cable Laying Works for Service Cable of Low Voltage Network for Alignment-RD-01 | 2027-04-14 → 2027-04-06 (-8d) | 2027-04-21 → 2027-04-13 (-8d) |  | none → -99d |  |
| CON-LV-HC-150 | Trench Backfilling and Compaction Works for Service Cable of Low Voltage Network for Alignment-RD-01 | 2027-04-22 → 2027-04-14 (-8d) | 2027-04-28 → 2027-04-20 (-8d) |  | none → -99d |  |

| ID | Task | Start | Finish | Total float |
| --- | --- | --- | --- | --- |
| DP | **Distribution Pillars Works** | 2027-04-07 → 2027-03-30 (-8d) | 2027-04-14 → 2027-04-06 (-8d) |  |
| CON-LV-DP-130 | Foundation Excavation Works for Distribution Pillars of Low Voltage Network for Alignment-RD-01 | 2027-04-07 → 2027-03-30 (-8d) | 2027-04-14 → 2027-04-06 (-8d) | none → -89d |
| SL | **Street Lighting Network** | 2027-03-17 → 2027-02-22 (-23d) | 2027-04-12 → 2027-04-11 (-1d) |  |
| LP | **Lighting Poles Works** | 2027-03-17 → 2027-02-22 (-23d) | 2027-04-07 → 2027-03-24 (-14d) |  |
| CO-SL-LP-350 | Installation Works for Lighting Poles Foundation of Street Lighting Network for Alignment-RD-01 | 2027-03-17 → 2027-02-22 (-23d) | 2027-03-25 → 2027-03-02 (-23d) | none → -84d |
| CO-SL-LP-360 | Installation Works for Lighting Poles of Street Lighting Network for Alignment-RD-01 | 2027-03-27 → 2027-03-13 (-14d) | 2027-03-31 → 2027-03-17 (-14d) | none → -89d |
| CO-SL-LP-380 | Backfilling Works for Lighting Poles of Street Lighting Network for Alignment-RD-01 | 2027-04-01 → 2027-03-18 (-14d) | 2027-04-07 → 2027-03-24 (-14d) | none → -85d |
| CW | **Cabling Works** | 2027-04-01 → 2027-03-31 (-1d) | 2027-04-12 → 2027-04-11 (-1d) |  |
| CO-SL-CL-290 | Cable Laying Works for Street Lighting Network for Alignment-RD-01 | 2027-04-01 → 2027-03-31 (-1d) | 2027-04-06 → 2027-04-05 (-1d) | none → -100d |
| CO-SL-CL-300 | Trench Backfilling and Compaction Works for Street Lighting Network for Alignment-RD-01 | 2027-04-07 → 2027-04-06 (-1d) | 2027-04-12 → 2027-04-11 (-1d) | none → -100d |
| TE | **Telecom and Light Current Network** | 2027-04-13 → 2027-04-12 (-1d) | 2027-05-06 → 2027-04-29 (-7d) |  |
| PD | **Ducts Works** | 2027-04-29 → 2027-04-21 (-8d) | 2027-05-06 → 2027-04-28 (-8d) |  |
| CO-TE-DW-150 | Pipes Laying Works for Ducts of Telecom Network for Alignment-RD-01 | 2027-04-29 → 2027-04-21 (-8d) | 2027-05-03 → 2027-04-25 (-8d) | none → -99d |
| CO-TE-DW-160 | Trench Backfilling and Compaction Works for Ducts of Telecom Network for Alignment-RD-01 | 2027-05-04 → 2027-04-26 (-8d) | 2027-05-06 → 2027-04-28 (-8d) | none → -99d |
| MH | **Manholes Works** | 2027-04-13 → 2027-04-12 (-1d) | 2027-04-21 → 2027-04-20 (-1d) |  |
| CO-TE-MH-170 | Excavation Works for Manholes of Telecom Network for Alignment-RD-01 | 2027-04-13 → 2027-04-12 (-1d) | 2027-04-17 → 2027-04-15 (-2d) | none → -92d |
| CO-TE-MH-180 | Installation Works for Manholes of Telecom Network for Alignment-RD-01 | 2027-04-13 → 2027-04-12 (-1d) | 2027-04-17 → 2027-04-15 (-2d) | none → -92d |
| CO-TE-MH-190 | Backfilling Works for Manholes of Telecom Network for Alignment-RD-01 | 2027-04-18 → 2027-04-17 (-1d) | 2027-04-21 → 2027-04-20 (-1d) | none → -92d |
| DD | **CCTV, Telephone, MSN, ACs System Works** | 2027-04-22 → 2027-04-21 (-1d) | 2027-05-01 → 2027-04-29 (-2d) |  |
| CO-TE-CTV-150 | Installation of CCTV, Telephone, ACS and MSN Systems Cables for Alignment-RD-01 | 2027-04-22 → 2027-04-21 (-1d) | 2027-05-01 → 2027-04-29 (-2d) | none → -81d |
| RD | **Road Network** | 2027-05-08 → 2027-04-29 (-9d) | 2027-05-24 → 2027-05-25 (+1d) |  |
| LS | **Pavement Works** | 2027-05-08 → 2027-04-29 (-9d) | 2027-05-24 → 2027-05-10 (-14d) |  |
| CO-RD-PV-180 | Fixing of Curbstone for Sidewalks Pavement for Alignment-RD-01 | 2027-05-08 → 2027-04-29 (-9d) | 2027-05-24 → 2027-05-10 (-14d) | none → -95d |
| CO-RD-PV-190 | Fixing of Interlock Tiles for Sidewalks Pavement for Alignment-RD-01 | 2027-05-08 → 2027-04-29 (-9d) | 2027-05-24 → 2027-05-10 (-14d) | none → -87d |
| TS | **Traffic Signs Boards and Roads Marking** | 2027-05-08 → 2027-05-03 (-5d) | 2027-05-22 → 2027-05-25 (+3d) |  |
| CO-RD-F-RM-190 | Application of Road Marking Works For Road Works for Alignment-RD-01 | 2027-05-08 → 2027-05-03 (-5d) | 2027-05-11 → 2027-05-06 (-5d) | none → -78d |
| CO-RD-F-TS-130 | Installation Works of Traffic Signs Boards For Road Works for Alignment-RD-01 | 2027-05-12 → 2027-05-22 (+10d) | 2027-05-22 → 2027-05-25 (+3d) | none → -85d |
| 3 | **Finishes for Infrastructure Networks** | 2027-03-31 → 2027-03-08 (-23d) | 2027-06-08 → 2027-06-14 (+6d) |  |
| 11 | **Storm Drainage Network** | 2027-05-08 → 2027-04-29 (-9d) | 2027-06-08 → 2027-06-14 (+6d) |  |
| TF | **Testing and Finishes** | 2027-05-08 → 2027-04-29 (-9d) | 2027-06-08 → 2027-06-14 (+6d) |  |
| CO-SD-CB-TF-190 | Catch Basin Internal Finishes (Benching ) for Storm Drainage Network for Alignment-RD-01 | 2027-05-08 → 2027-04-29 (-9d) | 2027-05-13 → 2027-05-05 (-8d) | none → -99d |
| CO-SD-ML-TF-110 | Testing Work for Pipes of Storm Drainage Network for Alignment-RD-01 | 2027-05-20 → 2027-05-26 (+6d) | 2027-05-22 → 2027-05-27 (+5d) | none → -111d |
| CO-SD-MH-TF-230 | Testing Works for Manholes of Storm Drainage Network for Alignment-RD-01 | 2027-05-23 → 2027-05-29 (+6d) | 2027-05-24 → 2027-05-30 (+6d) | none → -111d |
| CO-SD-CB-TF-170 | Testing Works for Catch Basins of Storm Drainage Network for Alignment-RD-01 | 2027-05-25 → 2027-05-31 (+6d) | 2027-06-01 → 2027-06-07 (+6d) | none → -111d |
| CO-SD-CB-TF-180 | Install Catch Basin Cover Works for External Finishes of Storm Drainage Network for Alignment-RD-01 | 2027-06-02 → 2027-06-08 (+6d) | 2027-06-08 → 2027-06-14 (+6d) | none → -98d |
| 10 | **Sewage Network** | 2027-05-08 → 2027-04-29 (-9d) | 2027-05-20 → 2027-05-06 (-14d) |  |
| TF | **Testing and Finishes** | 2027-05-08 → 2027-04-29 (-9d) | 2027-05-20 → 2027-05-06 (-14d) |  |
| CO-SW-TF-250 | Testing Works for Main Line Manholes of Sewage Network for Alignment-RD-01 | 2027-05-08 → 2027-04-29 (-9d) | 2027-05-10 → 2027-05-02 (-8d) | none → -80d |
| CO-SW-TF-230 | Final Testing For Main Line of Sewage Network for Alignment-RD-01 | 2027-05-11 → 2027-05-03 (-8d) | 2027-05-20 → 2027-05-06 (-14d) | none → -80d |
| 9 | **Potable Water Network** | 2027-05-08 → 2027-04-29 (-9d) | 2027-05-22 → 2027-05-08 (-14d) |  |
| TF | **Testing and Finishes** | 2027-05-08 → 2027-04-29 (-9d) | 2027-05-22 → 2027-05-08 (-14d) |  |
| CO-PW-TF-140 | Fire Hydrant Finishies (S.Box + Safety + Marker Post ) of Potable Water Network for Alignment-RD-01 | 2027-05-08 → 2027-04-29 (-9d) | 2027-05-11 → 2027-05-03 (-8d) | none → -83d |
| CO-PW-TF-150 | Final Finishes works and Covers for Valves and Valve Chambers for Alignment-RD-01 | 2027-05-12 → 2027-05-04 (-8d) | 2027-05-13 → 2027-05-05 (-8d) | none → -83d |
| CO-PW-TF-220 | Testing of Potable Water Network for Alignment-RD-01 | 2027-05-20 → 2027-05-06 (-14d) | 2027-05-22 → 2027-05-08 (-14d) | none → -83d |
| 13 | **Irrigation Network** | 2027-05-23 → 2027-05-09 (-14d) | 2027-05-24 → 2027-05-10 (-14d) |  |
| TF | **Testing and Finishes** | 2027-05-23 → 2027-05-09 (-14d) | 2027-05-24 → 2027-05-10 (-14d) |  |
| CO-IR-TF-170 | Final Testing (pressure tests) of Irrigation Network for Alignment-RD-01 | 2027-05-23 → 2027-05-09 (-14d) | 2027-05-24 → 2027-05-10 (-14d) | none → -83d |
| 1 | **Treated Sewage Effluent (Tse)** | 2027-05-23 → 2027-05-09 (-14d) | 2027-05-24 → 2027-05-10 (-14d) |  |
| TF | **Testing and Finishes** | 2027-05-23 → 2027-05-09 (-14d) | 2027-05-24 → 2027-05-10 (-14d) |  |
| CO-TSE-TF-210 | Final Testing (pressure tests) of Treated Sewage Effluent (Tse) for Alignment-RD-01 | 2027-05-23 → 2027-05-09 (-14d) | 2027-05-24 → 2027-05-10 (-14d) | none → -73d |
| 14 | **Medium Voltage Network** | 2027-03-31 → 2027-03-08 (-23d) | 2027-04-01 → 2027-03-13 (-19d) |  |
| TT | **Termination and Testing Works** | 2027-03-31 → 2027-03-08 (-23d) | 2027-04-01 → 2027-03-13 (-19d) |  |
| CO-MV-TF-230 | Testing and Termination Works of Medium Voltage Network for Alignment-RD-01 | 2027-03-31 → 2027-03-08 (-23d) | 2027-04-01 → 2027-03-13 (-19d) | none → -50d |
| 6 | **Low Voltage Network** | 2027-04-29 → 2027-04-21 (-8d) | 2027-05-03 → 2027-04-25 (-8d) |  |
| TT | **Termination and Testing Works** | 2027-04-29 → 2027-04-21 (-8d) | 2027-05-03 → 2027-04-25 (-8d) |  |
| CON-LV-TT-120 | Testing and Termination Works for Substation Low Voltage Panel Boards of Low Voltage Network for Alignment-RD-01 | 2027-04-29 → 2027-04-21 (-8d) | 2027-05-03 → 2027-04-25 (-8d) | none → -67d |
| 12 | **Street Lighting Network** | 2027-04-13 → 2027-04-12 (-1d) | 2027-05-09 → 2027-05-12 (+3d) |  |
| TR | **Termination and Testing Works** | 2027-04-13 → 2027-04-12 (-1d) | 2027-05-09 → 2027-05-12 (+3d) |  |
| CO-SL-LP-370 | Installation Works for Lighting Fixtures With Drop Wire of Street Lighting Network for Alignment-RD-01 | 2027-04-13 → 2027-04-12 (-1d) | 2027-04-19 → 2027-04-18 (-1d) | none → -100d |
| CO-SL-TF-410 | Testing Works for Lighting Poles of Street Lighting Network for Alignment-RD-01 | 2027-05-06 → 2027-05-10 (+4d) | 2027-05-09 → 2027-05-12 (+3d) | none → -81d |
| ES | **Earthing System Works** | 2027-05-01 → 2027-05-04 (+3d) | 2027-05-05 → 2027-05-09 (+4d) |  |
| CO-SL-ES-240 | Install Earthing System Works for Lighting Poles of Street Lighting Network for Alignment-RD-01 | 2027-05-01 → 2027-05-04 (+3d) | 2027-05-03 → 2027-05-06 (+3d) | none → -87d |
| CO-SL-ES-250 | Install Earthing System Works for Lighting Panel Boards of Street Lighting Network for Alignment-RD-01 | 2027-05-04 → 2027-05-08 (+4d) | 2027-05-05 → 2027-05-09 (+4d) | none → -86d |
| 3 | **Telecom and Light Current Network** | 2027-05-08 → 2027-04-29 (-9d) | 2027-05-13 → 2027-05-05 (-8d) |  |
| 1 | **Testing and Finishes** | 2027-05-08 → 2027-04-29 (-9d) | 2027-05-13 → 2027-05-05 (-8d) |  |
| CO-TE-CTV-TF-180 | Testing and Interface modules with Telecom for Alignment-RD-01 | 2027-05-08 → 2027-04-29 (-9d) | 2027-05-10 → 2027-05-02 (-8d) | none → -83d |
| CO-TE-CTV-TF-310 | Testing and Interface modules with CCTV, Telephone, MSN and Access Control for Alignment-RD-01 | 2027-05-11 → 2027-05-03 (-8d) | 2027-05-13 → 2027-05-05 (-8d) | none → -83d |
| 5 | **Alignment-RD-02** | 2026-11-29 → 2026-12-06 (+7d) | 2027-06-28 → 2027-07-05 (+7d) |  |
| EW | **Earthworks** | 2026-11-29 → 2026-12-06 (+7d) | 2026-12-12 → 2026-12-19 (+7d) |  |
| EW | **Earthworks** | 2026-11-29 → 2026-12-06 (+7d) | 2026-12-12 → 2026-12-19 (+7d) |  |

| ID | Task | Start | Finish | Total float |
| --- | --- | --- | --- | --- |
| CO-EW-220 | Excavation and Backfilling Works Upto Design Level for Earthworks for Alignment-RD-02 | 2026-11-29 → 2026-12-06 (+7d) | 2026-12-12 → 2026-12-19 (+7d) | none → -115d |
| SD | **Storm Drainage Network** | 2026-12-13 → 2026-12-20 (+7d) | 2027-04-03 → 2027-04-10 (+7d) |  |
| MH | **Manholes** | 2026-12-13 → 2026-12-20 (+7d) | 2026-12-27 → 2027-01-03 (+7d) |  |
| CO-SD-MH-270 | Trench Excavation and Bedding Works for Manholes of Storm Drainage Network for Alignment-RD-02 | 2026-12-13 → 2026-12-20 (+7d) | 2026-12-16 → 2026-12-23 (+7d) | none → -115d |
| CO-SD-MH-280 | Install RC Footing Works for Manholes of Storm Drainage Network for Alignment-RD-02 | 2026-12-17 → 2026-12-24 (+7d) | 2026-12-20 → 2026-12-27 (+7d) | none → -115d |
| CO-SD-MH-290 | Install RC Wall Rings & Slab Works for Manholes of Storm Drainage Network for Alignment-RD-02 | 2026-12-21 → 2026-12-28 (+7d) | 2026-12-23 → 2026-12-30 (+7d) | none → -115d |
| CO-SD-MH-300 | Backfilling Works for Manholes of Storm Drainage Network for Alignment-RD-02 | 2026-12-24 → 2026-12-31 (+7d) | 2026-12-27 → 2027-01-03 (+7d) | none → -109d |
| ML | **Main Line Sections** | 2026-12-24 → 2026-12-31 (+7d) | 2027-01-03 → 2027-01-10 (+7d) |  |
| CO-SD-ML-170 | Trench Excavation and Bedding Works for Main Lines of Storm Drainage Network for Alignment-RD-02 | 2026-12-24 → 2026-12-31 (+7d) | 2026-12-27 → 2027-01-03 (+7d) | none → -115d |
| CO-SD-ML-180 | Pipes Laying Works for Main Lines of Storm Drainage Network for Alignment-RD-02 | 2026-12-28 → 2027-01-04 (+7d) | 2026-12-30 → 2027-01-06 (+7d) | none → -115d |
| CO-SD-ML-190 | Trench Backfilling and Compaction Works for Main Lines of Storm Drainage Network for Alignment-RD-02 | 2026-12-31 → 2027-01-07 (+7d) | 2027-01-03 → 2027-01-10 (+7d) | none → -115d |
| CB | **Catch Basin Sections** | 2027-01-04 → 2027-01-11 (+7d) | 2027-04-03 → 2027-04-10 (+7d) |  |
| CO-SD-CB-210 | Trench Excavation and Bedding Works for Catch Basins of Storm Drainage Network for Alignment-RD-02 | 2027-01-04 → 2027-01-11 (+7d) | 2027-01-24 → 2027-01-31 (+7d) | none → -84d |
| CO-SD-CB-220 | Installation and Pipes Laying Connection Works for Catch Basins of Storm Drainage Network for Alignment-RD-02 | 2027-01-25 → 2027-02-01 (+7d) | 2027-02-15 → 2027-02-22 (+7d) | none → -84d |
| CO-SD-CB-230 | Trench Backfilling and Compaction Works for Catch Basins of Storm Drainage Network for Alignment-RD-02 | 2027-03-29 → 2027-04-05 (+7d) | 2027-04-03 → 2027-04-10 (+7d) | none → -116d |
| SW | **Sewage Network** | 2027-01-04 → 2027-01-11 (+7d) | 2027-03-15 → 2027-03-22 (+7d) |  |
| 1 | **Manholes** | 2027-01-04 → 2027-01-11 (+7d) | 2027-03-15 → 2027-03-22 (+7d) |  |
| CO-SW-MH-260 | Excavation Works for Main Line Manholes of Sewage Network for Alignment-RD-02 | 2027-01-04 → 2027-01-11 (+7d) | 2027-01-16 → 2027-01-23 (+7d) | none → -115d |
| CO-SW-MH-270 | Installation RC Footing Works for Main Line Manholes of Sewage Network for Alignment-RD-02 | 2027-01-17 → 2027-01-24 (+7d) | 2027-01-28 → 2027-02-04 (+7d) | none → -115d |
| CO-SW-MH-280 | Install Grp Liner Wall Works for Main Line Manholes of Sewage Network for Alignment-RD-02 | 2027-01-30 → 2027-02-06 (+7d) | 2027-02-11 → 2027-02-18 (+7d) | none → -115d |
| CO-SW-MH-290 | Pouring Grp Liner Wall Works for Main Line Manholes of Sewage Network for Alignment-RD-02 | 2027-02-13 → 2027-02-20 (+7d) | 2027-02-25 → 2027-03-04 (+7d) | none → -115d |
| CO-SW-MH-300 | Backfilling Works for Main Line Manholes of Sewage Network for Alignment-RD-02 | 2027-02-27 → 2027-03-06 (+7d) | 2027-03-15 → 2027-03-22 (+7d) | none → -115d |
| ML | **Main Line Sections** | 2027-01-04 → 2027-01-11 (+7d) | 2027-03-15 → 2027-03-22 (+7d) |  |
| CO-SW-ML-170 | Trench Excavation and Bedding Works for Main Lines of Sewage Network for Alignment-RD-02 | 2027-01-04 → 2027-01-11 (+7d) | 2027-01-16 → 2027-01-23 (+7d) | none → -76d |
| CO-SW-ML-180 | Pipes Laying Works for Main Lines of Sewage Network for Alignment-RD-02 | 2027-01-17 → 2027-01-24 (+7d) | 2027-01-28 → 2027-02-04 (+7d) | none → -76d |
| CO-SW-ML-190 | Trench Backfilling and Compaction Works for Main Lines of Sewage Network for Alignment-RD-02 | 2027-02-28 → 2027-03-07 (+7d) | 2027-03-15 → 2027-03-22 (+7d) | none → -101d |
| TSE | **Treated Sewage Effluent (Tse)** | 2027-01-04 → 2027-01-11 (+7d) | 2027-02-20 → 2027-02-27 (+7d) |  |
| CO-TSE-ML-250 | Trench Excavation and Bedding Works for Main Lines of Treated Sewage Effluent (Tse) for Alignment-RD-02 | 2027-01-04 → 2027-01-11 (+7d) | 2027-01-17 → 2027-01-24 (+7d) | none → -101d |
| CO-TSE-ML-260 | Pipes Laying Works for Main Lines of Treated Sewage Effluent (Tse) for Alignment-RD-02 | 2027-01-18 → 2027-01-25 (+7d) | 2027-02-06 → 2027-02-13 (+7d) | none → -101d |
| CO-TSE-ML-280 | Trench Backfilling and Compaction Works for Treated Sewage Effluent (Tse) for Alignment-RD-02 | 2027-02-07 → 2027-02-14 (+7d) | 2027-02-20 → 2027-02-27 (+7d) | none → -101d |
| PW | **Potable Water Network** | 2027-02-21 → 2027-02-28 (+7d) | 2027-03-16 → 2027-03-23 (+7d) |  |
| ML | **Main Line Sections** | 2027-02-21 → 2027-02-28 (+7d) | 2027-03-15 → 2027-03-22 (+7d) |  |
| CO-PW-ML-170 | Trench Excavation and Bedding Works for Main Lines of Potable Water Network for Alignment-RD-02 | 2027-02-21 → 2027-02-28 (+7d) | 2027-02-25 → 2027-03-04 (+7d) | none → -101d |
| CO-PW-ML-180 | Pipes Laying and accessories for Main Lines of Potable Water Network for Alignment-RD-02 | 2027-02-27 → 2027-03-06 (+7d) | 2027-03-06 → 2027-03-16 (+10d) | none → -101d |
| CO-PW-ML-190 | Trench Backfilling and Compaction Works for Main Lines of Potable Water Network for Alignment-RD-02 | 2027-03-07 → 2027-03-17 (+10d) | 2027-03-15 → 2027-03-22 (+7d) | none → -100d |
| VC | **Valve Chamber** | 2027-02-21 → 2027-02-28 (+7d) | 2027-03-16 → 2027-03-23 (+7d) |  |
| CO-PW-VC-260 | Excavation Works for Main Line Valves and Valve Chambers of Potable Water Network for Alignment-RD-02 | 2027-02-21 → 2027-02-28 (+7d) | 2027-02-25 → 2027-03-04 (+7d) | none → -101d |
| CO-PW-VC200 | Installation of Valve Chambers of Potable Water Network for Alignment-RD-02 | 2027-02-27 → 2027-03-06 (+7d) | 2027-03-01 → 2027-03-08 (+7d) | none → -101d |
| CO-PW-VC-270 | Installation Works for Valves of Potable Water Network for Alignment-RD-02 | 2027-03-02 → 2027-03-13 (+11d) | 2027-03-07 → 2027-03-17 (+10d) | none → -101d |
| CO-PW-VC-280 | Backfilling Works for Main Line Valves and Valve Chambers of Potable Water Network for Alignment-RD-02 | 2027-03-08 → 2027-03-18 (+10d) | 2027-03-16 → 2027-03-23 (+7d) | none → -101d |
| FH | **Fire Hydrant** | 2027-02-27 → 2027-03-06 (+7d) | 2027-03-16 → 2027-03-23 (+7d) |  |
| CO-PW-FH-200 | Excavation Works for Fire Hydrants of Potable Water Network for Alignment-RD-02 | 2027-02-27 → 2027-03-06 (+7d) | 2027-03-01 → 2027-03-08 (+7d) | none → -97d |
| CO-PW-FH-210 | Installation Works for Fire Hydrant of Potable Water Network for Alignment-RD-02 | 2027-03-07 → 2027-03-17 (+10d) | 2027-03-13 → 2027-03-20 (+7d) | none → -101d |
| CO-PW-FH-220 | Trench Backfilling and Compaction Works for Fire Hydrants of Potable Water Network for Alignment-RD-02 | 2027-03-14 → 2027-03-21 (+7d) | 2027-03-16 → 2027-03-23 (+7d) | none → -101d |
| IR | **Irrigation Network** | 2027-02-28 → 2027-03-07 (+7d) | 2027-03-23 → 2027-03-30 (+7d) |  |
| ML | **Main Line Pipes** | 2027-02-28 → 2027-03-07 (+7d) | 2027-03-23 → 2027-03-30 (+7d) |  |
| CO-IR-ML-200 | Trench Excavation and Bedding Works for Main Lines of Irrigation Network for Alignment-RD-02 | 2027-02-28 → 2027-03-07 (+7d) | 2027-03-02 → 2027-03-13 (+11d) | none → -87d |
| CO-IR-ML-210 | Pipes Laying Works for Main Lines of Irrigation Network for Alignment-RD-02 | 2027-03-07 → 2027-03-17 (+10d) | 2027-03-13 → 2027-03-20 (+7d) | none → -90d |
| CO-IR-ML-220 | Installation Works for Main Line Valves of Irrigation Network for Alignment-RD-02 | 2027-03-14 → 2027-03-21 (+7d) | 2027-03-16 → 2027-03-23 (+7d) | none → -90d |
| CO-IR-ML-240 | Installation Works for Bulbblers And Sprinkler and Irrigation Control System of Irrigation Network for Alignment-RD-02 | 2027-03-17 → 2027-03-24 (+7d) | 2027-03-20 → 2027-03-27 (+7d) | none → -90d |
| CO-IR-ML-230 | Trench Backfilling and Compaction Works for Main Lines of Irrigation Network for Alignment-RD-02 | 2027-03-21 → 2027-03-28 (+7d) | 2027-03-23 → 2027-03-30 (+7d) | none → -90d |
| MV | **Medium Voltage Network** | 2027-04-04 → 2027-04-11 (+7d) | 2027-04-17 → 2027-04-24 (+7d) |  |
| CW | **Cabling Works** | 2027-04-04 → 2027-04-11 (+7d) | 2027-04-17 → 2027-04-24 (+7d) |  |
| CO-MV-ML-310 | Trench Excavation and Bedding Works for Medium Voltage Network for Alignment-RD-02 | 2027-04-04 → 2027-04-11 (+7d) | 2027-04-07 → 2027-04-14 (+7d) | none → -116d |
| CO-MV-ML-320 | Duct Laying Works for Medium Voltage Network for Alignment-RD-02 | 2027-04-08 → 2027-04-15 (+7d) | 2027-04-12 → 2027-04-19 (+7d) | none → -116d |
| CO-MV-ML-330 | Trench Backfilling and Compaction Works for Medium Voltage Network for Alignment-RD-02 | 2027-04-13 → 2027-04-20 (+7d) | 2027-04-17 → 2027-04-24 (+7d) | none → -116d |
| LV | **Low Voltage Network** | 2027-03-24 → 2027-03-31 (+7d) | 2027-05-09 → 2027-05-22 (+13d) |  |
| MLVC | **Main Low Voltage Cables Works ( Cable 300 MM )** | 2027-03-24 → 2027-03-31 (+7d) | 2027-05-03 → 2027-05-10 (+7d) |  |
| CON-LV-ML-170 | Cable Laying Works for Main Cable of Low Voltage Network for Alignment-RD-02 | 2027-03-24 → 2027-03-31 (+7d) | 2027-04-06 → 2027-04-13 (+7d) | none → -90d |
| CON-LV-ML-160 | Trench Excavation and Bedding Works for Main Cable of Low Voltage Network for Alignment-RD-02 | 2027-04-18 → 2027-04-25 (+7d) | 2027-04-22 → 2027-04-29 (+7d) | none → -116d |
| CON-LV-ML-180 | Trench Backfilling and Compaction Works for Main Cable of Low Voltage Network for Alignment-RD-02 | 2027-04-24 → 2027-05-01 (+7d) | 2027-05-03 → 2027-05-10 (+7d) | none → -107d |
| SLVC | **Service Low Voltage Cables Works ( Cable 70 MM )** | 2027-04-24 → 2027-05-01 (+7d) | 2027-05-09 → 2027-05-22 (+13d) |  |
| CON-LV-HC-160 | Trench Excavation and Bedding Works for Service Cable of Low Voltage Network for Alignment-RD-02 | 2027-04-24 → 2027-05-01 (+7d) | 2027-04-27 → 2027-05-04 (+7d) | none → -108d |
| CON-LV-HC-170 | Cable Laying Works for Service Cable of Low Voltage Network for Alignment-RD-02 | 2027-04-28 → 2027-05-05 (+7d) | 2027-05-04 → 2027-05-11 (+7d) | none → -108d |
| CON-LV-HC-180 | Trench Backfilling and Compaction Works for Service Cable of Low Voltage Network for Alignment-RD-02 | 2027-05-05 → 2027-05-12 (+7d) | 2027-05-09 → 2027-05-22 (+13d) | none → -108d |
| DP | **Distribution Pillars Works** | 2027-04-18 → 2027-04-25 (+7d) | 2027-05-03 → 2027-05-10 (+7d) |  |
| CON-LV-DP-160 | Foundation Excavation Works for Distribution Pillars of Low Voltage Network for Alignment-RD-02 | 2027-04-18 → 2027-04-25 (+7d) | 2027-04-24 → 2027-05-01 (+7d) | none → -116d |
| CON-LV-DP-170 | Pouring Plain Concrete For Distribution Pillar Units of Low Voltage Network for Alignment-RD-02 | 2027-04-25 → 2027-05-02 (+7d) | 2027-04-28 → 2027-05-05 (+7d) | none → -96d |
| CON-LV-DP-180 | Installation Works for Distribution Pillar Units of Low Voltage Network for Alignment-RD-02 | 2027-04-29 → 2027-05-06 (+7d) | 2027-05-03 → 2027-05-10 (+7d) | none → -96d |
| SL | **Street Lighting Network** | 2027-04-25 → 2027-05-02 (+7d) | 2027-05-24 → 2027-05-31 (+7d) |  |

| ID | Task | Start | Finish | Total float |
| --- | --- | --- | --- | --- |
| LP | **Lighting Poles Works** | 2027-04-25 → 2027-05-02 (+7d) | 2027-05-06 → 2027-05-13 (+7d) |  |
| CO-SL-LP-400 | Installation Works for Lighting Poles Foundation of Street Lighting Network for Alignment-RD-02 | 2027-04-25 → 2027-05-02 (+7d) | 2027-04-28 → 2027-05-05 (+7d) | none → -116d |
| CO-SL-LP-410 | Installation Works for Lighting Poles of Street Lighting Network for Alignment-RD-02 | 2027-04-29 → 2027-05-06 (+7d) | 2027-05-03 → 2027-05-10 (+7d) | none → -116d |
| CO-SL-LP-430 | Backfilling Works for Lighting Poles of Street Lighting Network for Alignment-RD-02 | 2027-05-04 → 2027-05-11 (+7d) | 2027-05-06 → 2027-05-13 (+7d) | none → -116d |
| CW | **Cabling Works** | 2027-04-25 → 2027-05-02 (+7d) | 2027-05-02 → 2027-05-09 (+7d) |  |
| CO-SL-CL-320 | Cable Laying Works for Street Lighting Network for Alignment-RD-02 | 2027-04-25 → 2027-05-02 (+7d) | 2027-04-28 → 2027-05-05 (+7d) | none → -112d |
| CO-SL-CL-330 | Trench Backfilling and Compaction Works for Street Lighting Network for Alignment-RD-02 | 2027-04-29 → 2027-05-06 (+7d) | 2027-05-02 → 2027-05-09 (+7d) | none → -112d |
| DPB | **Distrubution Panel Boards** | 2027-05-08 → 2027-05-20 (+12d) | 2027-05-24 → 2027-05-31 (+7d) |  |
| CO-SL-DB-330 | Installation Works for Panel Board Concrete Foundations of Street Lighting Network for Alignment-RD-02 | 2027-05-08 → 2027-05-20 (+12d) | 2027-05-10 → 2027-05-23 (+13d) | none → -116d |
| CO-SL-DB-340 | Installation Works for Lighting Panel Boards of Street Lighting Network for Alignment-RD-02 | 2027-05-11 → 2027-05-24 (+13d) | 2027-05-24 → 2027-05-31 (+7d) | none → -116d |
| TE | **Telecom and Light Current Network** | 2027-04-18 → 2027-04-25 (+7d) | 2027-06-05 → 2027-06-12 (+7d) |  |
| PD | **Ducts Works** | 2027-05-25 → 2027-06-01 (+7d) | 2027-06-05 → 2027-06-12 (+7d) |  |
| CO-TE-DW-190 | Pipes Laying Works for Ducts of Telecom Network for Alignment-RD-02 | 2027-05-25 → 2027-06-01 (+7d) | 2027-05-30 → 2027-06-06 (+7d) | none → -116d |
| CO-TE-DW-200 | Trench Backfilling and Compaction Works for Ducts of Telecom Network for Alignment-RD-02 | 2027-05-31 → 2027-06-07 (+7d) | 2027-06-05 → 2027-06-12 (+7d) | none → -116d |
| MH | **Manholes Works** | 2027-04-18 → 2027-04-25 (+7d) | 2027-04-27 → 2027-05-04 (+7d) |  |
| CO-TE-MH-200 | Excavation Works for Manholes of Telecom Network for Alignment-RD-02 | 2027-04-18 → 2027-04-25 (+7d) | 2027-04-20 → 2027-04-27 (+7d) | none → -91d |
| CO-TE-MH-210 | Installation Works for Manholes of Telecom Network for Alignment-RD-02 | 2027-04-21 → 2027-04-28 (+7d) | 2027-04-24 → 2027-05-01 (+7d) | none → -91d |
| CO-TE-MH-220 | Backfilling Works for Manholes of Telecom Network for Alignment-RD-02 | 2027-04-25 → 2027-05-02 (+7d) | 2027-04-27 → 2027-05-04 (+7d) | none → -91d |
| DD | **CCTV, Telephone, MSN, ACs System Works** | 2027-04-28 → 2027-05-05 (+7d) | 2027-05-04 → 2027-05-11 (+7d) |  |
| CO-TE-CTV-180 | Installation of CCTV, Telephone, ACS and MSN Systems Cables for Alignment-RD-02 | 2027-04-28 → 2027-05-05 (+7d) | 2027-05-04 → 2027-05-11 (+7d) | none → -80d |
| RD | **Road Works** | 2027-05-10 → 2027-05-23 (+13d) | 2027-06-14 → 2027-06-21 (+7d) |  |
| LS | **Pavement Works** | 2027-05-10 → 2027-05-23 (+13d) | 2027-05-31 → 2027-06-07 (+7d) |  |
| CO-RD-PV-200 | Fixing of Curbstone for Sidewalks Pavement for Alignment-RD-02 | 2027-05-10 → 2027-05-23 (+13d) | 2027-05-20 → 2027-05-27 (+7d) | none → -101d |
| CO-RD-PV-210 | Fixing of Interlock Tiles for Sidewalks Pavement for Alignment-RD-02 | 2027-05-22 → 2027-05-29 (+7d) | 2027-05-31 → 2027-06-07 (+7d) | none → -101d |
| TS | **Traffic Signs Boards and Roads Marking** | 2027-06-06 → 2027-06-13 (+7d) | 2027-06-14 → 2027-06-21 (+7d) |  |
| CO-RD-F-RM-200 | Application of Road Marking Works For Road Works for Alignment-RD-02 | 2027-06-06 → 2027-06-13 (+7d) | 2027-06-09 → 2027-06-16 (+7d) | none → -105d |
| CO-RD-F-TS-140 | Installation Works of Traffic Signs Boards For Road Works for Alignment-RD-02 | 2027-06-10 → 2027-06-17 (+7d) | 2027-06-14 → 2027-06-21 (+7d) | none → -105d |
| 3 | **Finishes for Infrastructure Networks** | 2027-04-18 → 2027-04-25 (+7d) | 2027-06-28 → 2027-07-05 (+7d) |  |
| 11 | **Storm Drainage Network** | 2027-05-25 → 2027-06-01 (+7d) | 2027-06-28 → 2027-07-05 (+7d) |  |
| TF | **Testing and Finishes** | 2027-05-25 → 2027-06-01 (+7d) | 2027-06-28 → 2027-07-05 (+7d) |  |
| CO-SD-ML-TF-120 | Testing Work for Pipes of Storm Drainage Network for Alignment-RD-02 | 2027-05-25 → 2027-06-01 (+7d) | 2027-05-31 → 2027-06-07 (+7d) | none → -106d |
| CO-SD-CB-TF-220 | Catch Basin Internal Finishes (Benching ) for Storm Drainage Network for Alignment-RD-02 | 2027-06-06 → 2027-06-13 (+7d) | 2027-06-12 → 2027-06-19 (+7d) | none → -116d |
| CO-SD-MH-TF-250 | Testing Works for Manholes of Storm Drainage Network for Alignment-RD-02 | 2027-06-06 → 2027-06-13 (+7d) | 2027-06-12 → 2027-06-19 (+7d) | none → -102d |
| CO-SD-CB-TF-200 | Testing Works for Catch Basins of Storm Drainage Network for Alignment-RD-02 | 2027-06-13 → 2027-06-20 (+7d) | 2027-06-19 → 2027-06-26 (+7d) | none → -116d |
| CO-SD-CB-TF-210 | Install Catch Basin Cover Works for External Finishes of Storm Drainage Network for Alignment-RD-02 | 2027-06-20 → 2027-06-27 (+7d) | 2027-06-28 → 2027-07-05 (+7d) | none → -116d |
| 10 | **Sewage Network** | 2027-05-08 → 2027-04-29 (-9d) | 2027-06-02 → 2027-05-25 (-8d) |  |
| TF | **Testing and Finishes** | 2027-05-08 → 2027-04-29 (-9d) | 2027-06-02 → 2027-05-25 (-8d) |  |
| CO-SW-TF-270 | Final Testing For Main Line of Sewage Network for Alignment-RD-02 | 2027-05-08 → 2027-04-29 (-9d) | 2027-06-02 → 2027-05-25 (-8d) | none → -81d |
| CO-SW-TF-290 | Testing Works for Main Line Manholes of Sewage Network for Alignment-RD-02 | 2027-05-08 → 2027-04-29 (-9d) | 2027-06-02 → 2027-05-25 (-8d) | none → -81d |
| 9 | **Potable Water Network** | 2027-05-04 → 2027-04-26 (-8d) | 2027-06-13 → 2027-06-05 (-8d) |  |
| TF | **Testing and Finishes** | 2027-05-04 → 2027-04-26 (-8d) | 2027-06-13 → 2027-06-05 (-8d) |  |
| CO-PW-TF-170 | Fire Hydrant Finishies (S.Box + Safety + Marker Post ) of Potable Water Network for Alignment-RD-02 | 2027-05-04 → 2027-04-26 (-8d) | 2027-05-25 → 2027-05-11 (-14d) | none → -90d |
| CO-PW-TF-180 | Final Finishes works and Covers for Valves and Valve Chambers for Alignment-RD-02 | 2027-05-26 → 2027-05-12 (-14d) | 2027-06-03 → 2027-05-26 (-8d) | none → -90d |
| CO-PW-TF-160 | Testing of Potable Water Network for Alignment-RD-02 | 2027-06-05 → 2027-05-27 (-9d) | 2027-06-13 → 2027-06-05 (-8d) | none → -90d |
| 13 | **Irrigation Network** | 2027-05-22 → 2027-05-08 (-14d) | 2027-05-25 → 2027-05-11 (-14d) |  |
| TF | **Testing and Finishes** | 2027-05-22 → 2027-05-08 (-14d) | 2027-05-25 → 2027-05-11 (-14d) |  |
| CO-IR-TF-180 | Final Testing (pressure tests) of Irrigation Network for Alignment-RD-02 | 2027-05-22 → 2027-05-08 (-14d) | 2027-05-25 → 2027-05-11 (-14d) | none → -74d |
| 1 | **Treated Sewage Effluent (Tse)** | 2027-06-06 → 2027-05-29 (-8d) | 2027-06-12 → 2027-06-03 (-9d) |  |
| TF | **Testing and Finishes** | 2027-06-06 → 2027-05-29 (-8d) | 2027-06-12 → 2027-06-03 (-9d) |  |
| CO-TSE-TF-190 | Final Testing (pressure tests) of Treated Sewage Effluent (Tse) for Alignment-RD-02 | 2027-06-06 → 2027-05-29 (-8d) | 2027-06-12 → 2027-06-03 (-9d) | none → -89d |
| 14 | **Medium Voltage Network** | 2027-04-18 → 2027-04-25 (+7d) | 2027-04-24 → 2027-05-01 (+7d) |  |
| TT | **Termination and Testing Works** | 2027-04-18 → 2027-04-25 (+7d) | 2027-04-24 → 2027-05-01 (+7d) |  |
| CO-MV-TF-240 | Testing and Termination Works of Medium Voltage Network for Alignment-RD-02 | 2027-04-18 → 2027-04-25 (+7d) | 2027-04-24 → 2027-05-01 (+7d) | none → -86d |
| 6 | **Low Voltage Network** | 2027-05-09 → 2027-05-11 (+2d) | 2027-05-23 → 2027-05-26 (+3d) |  |
| TT | **Termination and Testing Works** | 2027-05-09 → 2027-05-11 (+2d) | 2027-05-23 → 2027-05-26 (+3d) |  |
| CON-LV-TT-150 | Testing and Termination Works for Distribution Pillars Units of Low Voltage Network for Alignment-RD-02 | 2027-05-09 → 2027-05-11 (+2d) | 2027-05-12 → 2027-05-20 (+8d) | none → -81d |
| CON-LV-TT-140 | Testing and Termination Works for Substation Low Voltage Panel Boards of Low Voltage Network for Alignment-RD-02 | 2027-05-13 → 2027-05-23 (+10d) | 2027-05-23 → 2027-05-26 (+3d) | none → -82d |
| 1 | **Earthing System Works** | 2027-05-13 → 2027-05-22 (+9d) | 2027-05-20 → 2027-05-23 (+3d) |  |
| CON-LV-ES-120 | Earthing System Works for Distribution Pillars Units of Low Voltage Network for Alignment-RD-02 | 2027-05-13 → 2027-05-22 (+9d) | 2027-05-20 → 2027-05-23 (+3d) | none → -79d |
| 12 | **Street Lighting Network** | 2027-05-11 → 2027-05-24 (+13d) | 2027-06-03 → 2027-06-10 (+7d) |  |
| TR | **Termination and Testing Works** | 2027-05-11 → 2027-05-24 (+13d) | 2027-06-03 → 2027-06-10 (+7d) |  |
| CO-SL-LP-420 | Installation Works for Lighting Fixtures With Drop Wire of Street Lighting Network for Alignment-RD-02 | 2027-05-11 → 2027-05-24 (+13d) | 2027-05-12 → 2027-05-25 (+13d) | none → -95d |
| CO-SL-TF-440 | Termination Works For Panel Board Cables of Street Lighting Network for Alignment-RD-02 | 2027-05-25 → 2027-06-01 (+7d) | 2027-05-31 → 2027-06-07 (+7d) | none → -92d |
| CO-SL-TF-450 | Testing Works for Lighting Poles of Street Lighting Network for Alignment-RD-02 | 2027-06-02 → 2027-06-09 (+7d) | 2027-06-03 → 2027-06-10 (+7d) | none → -95d |
| CO-SL-TF-460 | Testing Works For Panel Board Cables of Street Lighting Network for Alignment-RD-02 | 2027-06-02 → 2027-06-09 (+7d) | 2027-06-03 → 2027-06-10 (+7d) | none → -95d |
| ES | **Earthing System Works** | 2027-05-13 → 2027-05-26 (+13d) | 2027-06-01 → 2027-06-08 (+7d) |  |
| CO-SL-ES-260 | Install Earthing System Works for Lighting Poles of Street Lighting Network for Alignment-RD-02 | 2027-05-13 → 2027-05-26 (+13d) | 2027-05-25 → 2027-06-01 (+7d) | none → -95d |
| CO-SL-ES-270 | Install Earthing System Works for Lighting Panel Boards of Street Lighting Network for Alignment-RD-02 | 2027-05-26 → 2027-06-02 (+7d) | 2027-06-01 → 2027-06-08 (+7d) | none → -95d |
| 3 | **Alignment-RD-03-1** | 2026-11-02 → 2026-11-09 (+7d) | 2027-05-29 → 2027-05-25 (-4d) |  |
| EW | **Earthworks** | 2026-11-02 → 2026-11-09 (+7d) | 2026-11-15 → 2026-11-22 (+7d) |  |

| ID | Task | Start | Finish | Total float |
| --- | --- | --- | --- | --- |
| EW | **Earthworks** | 2026-11-02 → 2026-11-09 (+7d) | 2026-11-15 → 2026-11-22 (+7d) |  |
| CO-EW-200 | Excavation and Backfilling Works Upto Design Level for Earthworks for Alignment-RD-03-1 | 2026-11-02 → 2026-11-09 (+7d) | 2026-11-15 → 2026-11-22 (+7d) | none → -115d |
| SD | **Storm Drainage Network** | 2026-11-16 → 2026-11-23 (+7d) | 2026-12-23 → 2026-12-30 (+7d) |  |
| MH | **Manholes** | 2026-11-16 → 2026-11-23 (+7d) | 2026-12-23 → 2026-12-30 (+7d) |  |
| CO-SD-MH-180 | Trench Excavation and Bedding Works for Manholes of Storm Drainage Network for Alignment-RD-03-1 | 2026-11-16 → 2026-11-23 (+7d) | 2026-11-26 → 2026-12-03 (+7d) | none → -112d |
| CO-SD-MH-190 | Install RC Footing Works for Manholes of Storm Drainage Network for Alignment-RD-03-1 | 2026-11-28 → 2026-12-05 (+7d) | 2026-11-30 → 2026-12-07 (+7d) | none → -112d |
| CO-SD-MH-200 | Install RC Wall Rings & Slab Works for Manholes of Storm Drainage Network for Alignment-RD-03-1 | 2026-12-01 → 2026-12-08 (+7d) | 2026-12-12 → 2026-12-19 (+7d) | none → -112d |
| CO-SD-MH-220 | Backfilling Works for Manholes of Storm Drainage Network for Alignment-RD-03-1 | 2026-12-13 → 2026-12-20 (+7d) | 2026-12-23 → 2026-12-30 (+7d) | none → -112d |
| ML | **Main Line Sections** | 2026-12-13 → 2026-12-20 (+7d) | 2026-12-23 → 2026-12-30 (+7d) |  |
| CO-SD-ML-100 | Trench Excavation and Bedding Works for Main Lines of Storm Drainage Network for Alignment-RD-03-1 | 2026-12-13 → 2026-12-20 (+7d) | 2026-12-15 → 2026-12-22 (+7d) | none → -112d |
| CO-SD-ML-120 | Pipes Laying Works for Main Lines of Storm Drainage Network for Alignment-RD-03-1 | 2026-12-16 → 2026-12-23 (+7d) | 2026-12-19 → 2026-12-26 (+7d) | none → -112d |
| CO-SD-ML-130 | Trench Backfilling and Compaction Works for Main Lines of Storm Drainage Network for Alignment-RD-03-1 | 2026-12-20 → 2026-12-27 (+7d) | 2026-12-23 → 2026-12-30 (+7d) | none → -112d |
| TSE | **Treated Sewage Effluent (Tse)** |  | 2027-05-27 → 2027-05-13 (-14d) |  |
| CO-TSE-ML-160 | Pipes Laying Works for Main Lines of Treated Sewage Effluent (Tse) for Alignment-RD-03-1 | 2027-01-05 → 2027-01-09 (+4d) | 2027-01-09 → 2027-01-12 (+3d) | none → -95d |
| CO-TSE-ML-170 | Installation Works for Main Line Valves of Treated Sewage Effluent (Tse) for Alignment-RD-03-1 | 2027-01-10 → 2027-01-13 (+3d) | 2027-01-16 → 2027-01-19 (+3d) | none → -95d |
| CO-TSE-ML-190 | Installation Works for Valve and Washout Chambers of Treated Sewage Effluent (Tse) for Alignment-RD-03-1 | 2027-01-17 → 2027-01-20 (+3d) | 2027-01-23 → 2027-01-26 (+3d) | none → -95d |
| CO-TSE-ML-180 | Trench Backfilling and Compaction Works for Treated Sewage Effluent (Tse) for Alignment-RD-03-1 | 2027-01-24 → 2027-01-27 (+3d) | 2027-01-28 → 2027-02-01 (+4d) | none → -95d |
| TA | **Treated Sewage Effluent (Tse) Storage Tank** | 2027-05-22 → 2027-05-08 (-14d) | 2027-05-27 → 2027-05-13 (-14d) |  |
| CO-TSE-TF-180 | Installation of Storage Tank of Treated Sewage Effluent (Tse) for Alignment-RD-03-1 | 2027-05-22 → 2027-05-08 (-14d) | 2027-05-27 → 2027-05-13 (-14d) | none → -89d |
| PW | **Potable Water Network** | 2027-01-30 → 2027-02-02 (+3d) | 2027-05-20 → 2027-05-06 (-14d) |  |
| ML | **Main Line Sections** | 2027-01-30 → 2027-02-02 (+3d) | 2027-02-17 → 2027-02-21 (+4d) |  |
| CO-PW-ML-100 | Trench Excavation and Bedding Works for Main Lines of Potable Water Network for Alignment-RD-03-1 | 2027-01-30 → 2027-02-02 (+3d) | 2027-02-03 → 2027-02-07 (+4d) | none → -95d |
| CO-PW-ML-110 | Pipes Laying and accessories for Main Lines of Potable Water Network for Alignment-RD-03-1 | 2027-02-04 → 2027-02-08 (+4d) | 2027-02-09 → 2027-02-13 (+4d) | none → -95d |
| CO-PW-ML-130 | Trench Backfilling and Compaction Works for Main Lines of Potable Water Network for Alignment-RD-03-1 | 2027-02-10 → 2027-02-14 (+4d) | 2027-02-17 → 2027-02-21 (+4d) | none → -95d |
| VC | **Valve Chamber** | 2027-02-01 → 2027-02-04 (+3d) | 2027-02-20 → 2027-02-27 (+7d) |  |
| CO-PW-VC-170 | Excavation Works for Main Line Valves and Valve Chambers of Potable Water Network for Alignment-RD-03-1 | 2027-02-01 → 2027-02-04 (+3d) | 2027-02-03 → 2027-02-07 (+4d) | none → -81d |
| CO-PW-VC180 | Installation of Valve Chambers of Potable Water Network for Alignment-RD-03-1 | 2027-02-04 → 2027-02-08 (+4d) | 2027-02-07 → 2027-02-10 (+3d) | none → -81d |
| CO-PW-VC-190 | Installation Works for Valves of Potable Water Network for Alignment-RD-03-1 | 2027-02-14 → 2027-02-21 (+7d) | 2027-02-16 → 2027-02-23 (+7d) | none → -89d |
| CO-PW-VC-220 | Backfilling Works for Main Line Valves and Valve Chambers of Potable Water Network for Alignment-RD-03-1 | 2027-02-17 → 2027-02-24 (+7d) | 2027-02-20 → 2027-02-27 (+7d) | none → -89d |
| FH | **Fire Hydrant** | 2027-02-04 → 2027-02-08 (+4d) | 2027-02-20 → 2027-02-27 (+7d) |  |
| CO-PW-FH-140 | Excavation Works for Fire Hydrants of Potable Water Network for Alignment-RD-03-1 | 2027-02-04 → 2027-02-08 (+4d) | 2027-02-06 → 2027-02-09 (+3d) | none → -78d |
| CO-PW-FH-150 | Installation Works for Fire Hydrant of Potable Water Network for Alignment-RD-03-1 | 2027-02-10 → 2027-02-14 (+4d) | 2027-02-11 → 2027-02-15 (+4d) | none → -81d |
| CO-PW-FH-160 | Trench Backfilling and Compaction Works for Fire Hydrants of Potable Water Network for Alignment-RD-03-1 | 2027-02-18 → 2027-02-25 (+7d) | 2027-02-20 → 2027-02-27 (+7d) | none → -89d |
| TA | **Potable Water Network Storage Tank** | 2027-05-09 → 2027-05-01 (-8d) | 2027-05-20 → 2027-05-06 (-14d) |  |
| CO-PW-TF-130 | Installation of Storage Tank of Potable Water Network for Alignment-RD-03-1 | 2027-05-09 → 2027-05-01 (-8d) | 2027-05-20 → 2027-05-06 (-14d) | none → -89d |
| LV | **Low Voltage Network** | 2027-02-18 → 2027-02-22 (+4d) | 2027-04-17 → 2027-04-24 (+7d) |  |
| MLVC | **Main Low Voltage Cables Works ( Cable 300 MM )** | 2027-02-18 → 2027-02-22 (+4d) | 2027-03-15 → 2027-03-18 (+3d) |  |
| CON-LV-ML-100 | Trench Excavation and Bedding Works for Main Cable of Low Voltage Network for Alignment-RD-03-1 | 2027-02-18 → 2027-02-22 (+4d) | 2027-02-27 → 2027-03-02 (+3d) | none → -95d |
| CON-LV-ML-110 | Cable Laying Works for Main Cable of Low Voltage Network for Alignment-RD-03-1 | 2027-02-28 → 2027-03-03 (+3d) | 2027-03-07 → 2027-03-14 (+7d) | none → -95d |
| CON-LV-ML-120 | Trench Backfilling and Compaction Works for Main Cable of Low Voltage Network for Alignment-RD-03-1 | 2027-03-08 → 2027-03-15 (+7d) | 2027-03-15 → 2027-03-18 (+3d) | none → -92d |
| SLVC | **Service Low Voltage Cables Works ( Cable 70 MM )** | 2027-02-28 → 2027-03-03 (+3d) | 2027-04-03 → 2027-04-10 (+7d) |  |
| CON-LV-HC-100 | Trench Excavation and Bedding Works for Service Cable of Low Voltage Network for Alignment-RD-03-1 | 2027-02-28 → 2027-03-03 (+3d) | 2027-03-03 → 2027-03-07 (+4d) | none → -92d |
| CON-LV-HC-110 | Cable Laying Works for Service Cable of Low Voltage Network for Alignment-RD-03-1 | 2027-03-23 → 2027-03-30 (+7d) | 2027-03-30 → 2027-04-06 (+7d) | none → -108d |
| CON-LV-HC-120 | Trench Backfilling and Compaction Works for Service Cable of Low Voltage Network for Alignment-RD-03-1 | 2027-03-31 → 2027-04-07 (+7d) | 2027-04-03 → 2027-04-10 (+7d) | none → -108d |
| DP | **Distribution Pillars Works** | 2027-04-04 → 2027-04-11 (+7d) | 2027-04-17 → 2027-04-24 (+7d) |  |
| CON-LV-DP-100 | Foundation Excavation Works for Distribution Pillars of Low Voltage Network for Alignment-RD-03-1 | 2027-04-04 → 2027-04-11 (+7d) | 2027-04-07 → 2027-04-14 (+7d) | none → -108d |
| CON-LV-DP-110 | Pouring Plain Concrete For Distribution Pillar Units of Low Voltage Network for Alignment-RD-03-1 | 2027-04-08 → 2027-04-15 (+7d) | 2027-04-12 → 2027-04-19 (+7d) | none → -108d |
| CON-LV-DP-120 | Installation Works for Distribution Pillar Units of Low Voltage Network for Alignment-RD-03-1 | 2027-04-13 → 2027-04-20 (+7d) | 2027-04-17 → 2027-04-24 (+7d) | none → -108d |
| SL | **Street Lighting Network** | 2027-03-23 → 2027-03-02 (-21d) | 2027-04-14 → 2027-03-29 (-16d) |  |
| LP | **Lighting Poles Works** | 2027-03-23 → 2027-03-02 (-21d) | 2027-04-10 → 2027-03-24 (-17d) |  |
| CO-SL-LP-550 | Installation Works for Lighting Poles Foundation of Street Lighting Network for Alignment-RD-03-1 | 2027-03-23 → 2027-03-02 (-21d) | 2027-03-28 → 2027-03-07 (-21d) | none → -93d |
| CO-SL-LP-560 | Installation Works for Lighting Poles of Street Lighting Network for Alignment-RD-03-1 | 2027-03-29 → 2027-03-13 (-16d) | 2027-04-03 → 2027-03-17 (-17d) | none → -94d |
| CO-SL-LP-570 | Backfilling Works for Lighting Poles of Street Lighting Network for Alignment-RD-03-1 | 2027-04-04 → 2027-03-18 (-17d) | 2027-04-10 → 2027-03-24 (-17d) | none → -90d |
| CW | **Cabling Works** | 2027-04-04 → 2027-03-18 (-17d) | 2027-04-14 → 2027-03-29 (-16d) |  |
| CO-SL-CL-410 | Cable Laying Works for Street Lighting Network for Alignment-RD-03-1 | 2027-04-04 → 2027-03-18 (-17d) | 2027-04-08 → 2027-03-23 (-16d) | none → -94d |
| CO-SL-CL-420 | Trench Backfilling and Compaction Works for Street Lighting Network for Alignment-RD-03-1 | 2027-04-10 → 2027-03-24 (-17d) | 2027-04-14 → 2027-03-29 (-16d) | none → -94d |
| TE | **Telecom and Light Current Network** |  | 2027-04-24 → 2027-04-21 (-3d) |  |
| PD | **Ducts Works** | 2027-04-15 → 2027-04-11 (-4d) | 2027-04-24 → 2027-04-19 (-5d) |  |
| CO-TE-DW-110 | Pipes Laying Works for Ducts of Telecom Network for Alignment-RD-03-1 | 2027-04-15 → 2027-04-11 (-4d) | 2027-04-19 → 2027-04-14 (-5d) | none → -104d |
| CO-TE-DW-130 | Trench Backfilling and Compaction Works for Ducts of Telecom Network for Alignment-RD-03-1 | 2027-04-20 → 2027-04-15 (-5d) | 2027-04-24 → 2027-04-19 (-5d) | none → -104d |
| 1 | **Bituminous Construction** |  | 2027-05-10 → 2027-05-06 (-4d) |  |
| CON-RD-MR-150 | Preparation of Asphaltic Wearing Course Layer for Roads Network for Alignment-RD-03-1 | 2027-05-09 → 2027-05-05 (-4d) | 2027-05-10 → 2027-05-06 (-4d) | none → -79d |
| TS | **Traffic Signs Boards and Roads Marking** |  | 2027-05-20 → 2027-05-23 (+3d) |  |
| CO-RD-F-TS-120 | Installation Works of Traffic Signs Boards For Road Works for Alignment-RD-03-1 | 2027-05-13 → 2027-05-22 (+9d) | 2027-05-20 → 2027-05-23 (+3d) | none → -84d |
| 3 | **Finishes for Infrastructure Networks** | 2027-04-18 → 2027-04-22 (+4d) | 2027-05-29 → 2027-05-23 (-6d) |  |
| 11 | **Storm Drainage Network** | 2027-05-08 → 2027-05-01 (-7d) | 2027-05-13 → 2027-05-06 (-7d) |  |
| TF | **Testing and Finishes** | 2027-05-08 → 2027-05-01 (-7d) | 2027-05-13 → 2027-05-06 (-7d) |  |
| CO-SD-ML-TF-100 | Testing Work for Pipes of Storm Drainage Network for Alignment-RD-03-1 | 2027-05-08 → 2027-05-01 (-7d) | 2027-05-10 → 2027-05-03 (-7d) | none → -92d |
| CO-SD-MH-TF-210 | Testing Works for Manholes of Storm Drainage Network for Alignment-RD-03-1 | 2027-05-11 → 2027-05-04 (-7d) | 2027-05-13 → 2027-05-06 (-7d) | none → -76d |
| 9 | **Potable Water Network** | 2027-05-04 → 2027-04-26 (-8d) | 2027-05-08 → 2027-04-29 (-9d) |  |

| ID | Task | Start | Finish | Total float |
| --- | --- | --- | --- | --- |
| TF | **Testing and Finishes** | 2027-05-04 → 2027-04-26 (-8d) | 2027-05-08 → 2027-04-29 (-9d) |  |
| CO-PW-TF-100 | Final Finishes works and Covers for Valves and Valve Chambers for Alignment-RD-03-1 | 2027-05-04 → 2027-04-26 (-8d) | 2027-05-08 → 2027-04-29 (-9d) | none → -89d |
| CO-PW-TF-110 | Testing of Potable Water Network for Alignment-RD-03-1 | 2027-05-04 → 2027-04-26 (-8d) | 2027-05-05 → 2027-04-27 (-8d) | none → -75d |
| CO-PW-TF-120 | Fire Hydrant Finishies (S.Box + Safety + Marker Post ) of Potable Water Network for Alignment-RD-03-1 | 2027-05-04 → 2027-04-26 (-8d) | 2027-05-06 → 2027-04-28 (-8d) | none → -90d |
| 1 | **Treated Sewage Effluent (Tse)** | 2027-05-29 → 2027-05-20 (-9d) | 2027-05-29 → 2027-05-20 (-9d) |  |
| TF | **Testing and Finishes** | 2027-05-29 → 2027-05-20 (-9d) | 2027-05-29 → 2027-05-20 (-9d) |  |
| CO-TSE-TF-170 | Final Testing (pressure tests) of Treated Sewage Effluent (Tse) for Alignment-RD-03-1 | 2027-05-29 → 2027-05-20 (-9d) | 2027-05-29 → 2027-05-20 (-9d) | none → -89d |
| 6 | **Low Voltage Network** | 2027-04-18 → 2027-04-25 (+7d) | 2027-04-21 → 2027-04-28 (+7d) |  |
| TT | **Termination and Testing Works** | 2027-04-18 → 2027-04-25 (+7d) | 2027-04-21 → 2027-04-28 (+7d) |  |
| CON-LV-TT-110 | Testing and Termination Works for Distribution Pillars Units of Low Voltage Network for Alignment-RD-03-1 | 2027-04-18 → 2027-04-25 (+7d) | 2027-04-19 → 2027-04-26 (+7d) | none → -79d |
| CON-LV-TT-100 | Testing and Termination Works for Substation Low Voltage Panel Boards of Low Voltage Network for Alignment-RD-03-1 | 2027-04-20 → 2027-04-27 (+7d) | 2027-04-21 → 2027-04-28 (+7d) | none → -69d |
| 1 | **Earthing System Works** | 2027-04-20 → 2027-04-27 (+7d) | 2027-04-21 → 2027-04-28 (+7d) |  |
| CON-LV-ES-100 | Earthing System Works for Distribution Pillars Units of Low Voltage Network for Alignment-RD-03-1 | 2027-04-20 → 2027-04-27 (+7d) | 2027-04-21 → 2027-04-28 (+7d) | none → -79d |
| 12 | **Street Lighting Network** | 2027-04-27 → 2027-04-26 (-1d) | 2027-05-22 → 2027-05-23 (+1d) |  |
| TR | **Termination and Testing Works** | 2027-04-27 → 2027-04-26 (-1d) | 2027-05-22 → 2027-05-23 (+1d) |  |
| CO-SL-LP-580 | Installation Works for Lighting Fixtures With Drop Wire of Street Lighting Network for Alignment-RD-03-1 | 2027-04-27 → 2027-04-26 (-1d) | 2027-05-03 → 2027-05-02 (-1d) | none → -86d |
| CO-SL-TF-570 | Testing Works for Lighting Poles of Street Lighting Network for Alignment-RD-03-1 | 2027-05-10 → 2027-05-11 (+1d) | 2027-05-22 → 2027-05-23 (+1d) | none → -85d |
| 2 | **Alignment-RD-03-2** | 2026-11-04 → 2026-11-09 (+5d) | 2027-06-24 → 2027-06-28 (+4d) |  |
| EW | **Earthworks** | 2026-11-04 → 2026-11-09 (+5d) | 2026-11-17 → 2026-11-22 (+5d) |  |
| EW | **Earthworks** | 2026-11-04 → 2026-11-09 (+5d) | 2026-11-17 → 2026-11-22 (+5d) |  |
| CO-EW-240 | Excavation and Backfilling Works Upto Design Level for Earthworks for Alignment-RD-03-2 | 2026-11-04 → 2026-11-09 (+5d) | 2026-11-17 → 2026-11-22 (+5d) | none → -60d |
| SD | **Storm Drainage Network** | 2026-12-24 → 2026-12-31 (+7d) | 2027-02-16 → 2027-02-23 (+7d) |  |
| MH | **Manholes** | 2026-12-24 → 2026-12-31 (+7d) | 2027-02-03 → 2027-02-10 (+7d) |  |
| CO-SD-MH-350 | Trench Excavation and Bedding Works for Manholes of Storm Drainage Network for Alignment-RD-03-2 | 2026-12-24 → 2026-12-31 (+7d) | 2027-01-04 → 2027-01-11 (+7d) | none → -93d |
| CO-SD-MH-360 | Install RC Footing Works for Manholes of Storm Drainage Network for Alignment-RD-03-2 | 2027-01-05 → 2027-01-12 (+7d) | 2027-01-14 → 2027-01-21 (+7d) | none → -93d |
| CO-SD-MH-370 | Install RC Wall Rings & Slab Works for Manholes of Storm Drainage Network for Alignment-RD-03-2 | 2027-01-16 → 2027-01-23 (+7d) | 2027-01-26 → 2027-02-02 (+7d) | none → -93d |
| CO-SD-MH-380 | Backfilling Works for Manholes of Storm Drainage Network for Alignment-RD-03-2 | 2027-01-27 → 2027-02-03 (+7d) | 2027-02-03 → 2027-02-10 (+7d) | none → -82d |
| ML | **Main Line Sections** | 2027-01-27 → 2027-02-03 (+7d) | 2027-02-16 → 2027-02-23 (+7d) |  |
| CO-SD-ML-230 | Trench Excavation and Bedding Works for Main Lines of Storm Drainage Network for Alignment-RD-03-2 | 2027-01-27 → 2027-02-03 (+7d) | 2027-02-03 → 2027-02-10 (+7d) | none → -93d |
| CO-SD-ML-240 | Pipes Laying Works for Main Lines of Storm Drainage Network for Alignment-RD-03-2 | 2027-02-04 → 2027-02-11 (+7d) | 2027-02-09 → 2027-02-16 (+7d) | none → -93d |
| CO-SD-ML-250 | Trench Backfilling and Compaction Works for Main Lines of Storm Drainage Network for Alignment-RD-03-2 | 2027-02-10 → 2027-02-17 (+7d) | 2027-02-16 → 2027-02-23 (+7d) | none → -93d |
| MV | **Medium Voltage Network** | 2027-03-17 → 2027-02-24 (-21d) | 2027-04-04 → 2027-03-15 (-20d) |  |
| CW | **Cabling Works** | 2027-03-17 → 2027-02-24 (-21d) | 2027-04-04 → 2027-03-15 (-20d) |  |
| CO-MV-ML-370 | Trench Excavation and Bedding Works for Medium Voltage Network for Alignment-RD-03-2 | 2027-03-17 → 2027-02-24 (-21d) | 2027-03-22 → 2027-03-01 (-21d) | none → -93d |
| CO-MV-ML-380 | Duct Laying Works for Medium Voltage Network for Alignment-RD-03-2 | 2027-03-24 → 2027-03-02 (-22d) | 2027-03-29 → 2027-03-07 (-22d) | none → -89d |
| CO-MV-ML-390 | Trench Backfilling and Compaction Works for Medium Voltage Network for Alignment-RD-03-2 | 2027-03-31 → 2027-03-08 (-23d) | 2027-04-04 → 2027-03-15 (-20d) | none → -89d |
| LV | **Low Voltage Network** | 2027-04-07 → 2027-03-30 (-8d) | 2027-05-11 → 2027-05-03 (-8d) |  |
| MLVC | **Main Low Voltage Cables Works ( Cable 300 MM )** | 2027-04-07 → 2027-03-30 (-8d) | 2027-05-01 → 2027-04-22 (-9d) |  |
| CON-LV-ML-220 | Trench Excavation and Bedding Works for Main Cable of Low Voltage Network for Alignment-RD-03-2 | 2027-04-07 → 2027-03-30 (-8d) | 2027-04-13 → 2027-04-05 (-8d) | none → -101d |
| CON-LV-ML-230 | Cable Laying Works for Main Cable of Low Voltage Network for Alignment-RD-03-2 | 2027-04-14 → 2027-04-06 (-8d) | 2027-04-24 → 2027-04-15 (-9d) | none → -101d |
| CON-LV-ML-240 | Trench Backfilling and Compaction Works for Main Cable of Low Voltage Network for Alignment-RD-03-2 | 2027-04-25 → 2027-04-17 (-8d) | 2027-05-01 → 2027-04-22 (-9d) | none → -98d |
| SLVC | **Service Low Voltage Cables Works ( Cable 70 MM )** | 2027-04-14 → 2027-04-06 (-8d) | 2027-05-11 → 2027-05-03 (-8d) |  |
| CON-LV-HC-220 | Trench Excavation and Bedding Works for Service Cable of Low Voltage Network for Alignment-RD-03-2 | 2027-04-14 → 2027-04-06 (-8d) | 2027-04-19 → 2027-04-11 (-8d) | none → -97d |
| CON-LV-HC-230 | Cable Laying Works for Service Cable of Low Voltage Network for Alignment-RD-03-2 | 2027-04-25 → 2027-04-17 (-8d) | 2027-05-04 → 2027-04-26 (-8d) | none → -101d |
| CON-LV-HC-240 | Trench Backfilling and Compaction Works for Service Cable of Low Voltage Network for Alignment-RD-03-2 | 2027-05-05 → 2027-04-27 (-8d) | 2027-05-11 → 2027-05-03 (-8d) | none → -101d |
| DP | **Distribution Pillars Works** | 2027-04-15 → 2027-04-07 (-8d) | 2027-04-27 → 2027-04-19 (-8d) |  |
| CON-LV-DP-220 | Foundation Excavation Works for Distribution Pillars of Low Voltage Network for Alignment-RD-03-2 | 2027-04-15 → 2027-04-07 (-8d) | 2027-04-22 → 2027-04-14 (-8d) | none → -89d |
| CON-LV-DP-230 | Pouring Plain Concrete For Distribution Pillar Units of Low Voltage Network for Alignment-RD-03-2 | 2027-04-24 → 2027-04-15 (-9d) | 2027-04-25 → 2027-04-17 (-8d) | none → -89d |
| CON-LV-DP-240 | Installation Works for Distribution Pillar Units of Low Voltage Network for Alignment-RD-03-2 | 2027-04-26 → 2027-04-18 (-8d) | 2027-04-27 → 2027-04-19 (-8d) | none → -89d |
| SL | **Street Lighting Network** | 2027-03-23 → 2027-03-02 (-21d) | 2027-04-15 → 2027-04-11 (-4d) |  |
| LP | **Lighting Poles Works** | 2027-03-23 → 2027-03-02 (-21d) | 2027-04-10 → 2027-03-24 (-17d) |  |
| CO-SL-LP-500 | Installation Works for Lighting Poles Foundation of Street Lighting Network for Alignment-RD-03-2 | 2027-03-23 → 2027-03-02 (-21d) | 2027-03-28 → 2027-03-07 (-21d) | none → -82d |
| CO-SL-LP-510 | Installation Works for Lighting Poles of Street Lighting Network for Alignment-RD-03-2 | 2027-03-29 → 2027-03-13 (-16d) | 2027-04-03 → 2027-03-17 (-17d) | none → -83d |
| CO-SL-LP-520 | Backfilling Works for Lighting Poles of Street Lighting Network for Alignment-RD-03-2 | 2027-04-04 → 2027-03-18 (-17d) | 2027-04-10 → 2027-03-24 (-17d) | none → -79d |
| CW | **Cabling Works** | 2027-04-05 → 2027-03-31 (-5d) | 2027-04-15 → 2027-04-11 (-4d) |  |
| CO-SL-CL-380 | Cable Laying Works for Street Lighting Network for Alignment-RD-03-2 | 2027-04-05 → 2027-03-31 (-5d) | 2027-04-10 → 2027-04-05 (-5d) | none → -94d |
| CO-SL-CL-390 | Trench Backfilling and Compaction Works for Street Lighting Network for Alignment-RD-03-2 | 2027-04-11 → 2027-04-06 (-5d) | 2027-04-15 → 2027-04-11 (-4d) | none → -94d |
| TE | **Telecom and Light Current Network** | 2027-05-12 → 2027-05-04 (-8d) | 2027-05-20 → 2027-05-06 (-14d) |  |
| DD | **CCTV, Telephone, MSN, ACs System Works** | 2027-05-12 → 2027-05-04 (-8d) | 2027-05-20 → 2027-05-06 (-14d) |  |
| CO-TE-CTV-240 | Installation of CCTV, Telephone, ACS and MSN Systems Cables for Alignment-RD-03-2 | 2027-05-12 → 2027-05-04 (-8d) | 2027-05-20 → 2027-05-06 (-14d) | none → -84d |
| RD | **Road Works** | 2027-05-12 → 2027-05-11 (-1d) | 2027-06-24 → 2027-06-28 (+4d) |  |
| RD | **Pre-Bituminous Construction** | 2027-05-12 → 2027-05-11 (-1d) | 2027-05-29 → 2027-05-27 (-2d) |  |
| CO-RD-PB-220 | Subgrade Layer for Road Works for Alignment-RD-03-2 | 2027-05-12 → 2027-05-11 (-1d) | 2027-05-23 → 2027-05-22 (-1d) | none → -107d |
| CO-RD-PB-230 | Installation of Aggregate Base Course Layer and Interlock Works for Road Works for Alignment-RD-03-2 | 2027-05-24 → 2027-05-23 (-1d) | 2027-05-29 → 2027-05-27 (-2d) | none → -107d |
| 1 | **Bituminous Construction** | 2027-05-30 → 2027-05-29 (-1d) | 2027-06-15 → 2027-06-21 (+6d) |  |
| CO-RD-B-240 | Bituminous Base Courses Layers for Road Works for Alignment-RD-03-2 | 2027-05-30 → 2027-05-29 (-1d) | 2027-06-01 → 2027-05-31 (-1d) | none → -107d |
| CON-RD-MR-230 | Preparation of Asphaltic Wearing Course Layer for Roads Network for Alignment-RD-03-2 | 2027-06-13 → 2027-06-19 (+6d) | 2027-06-15 → 2027-06-21 (+6d) | none → -111d |
| LS | **Pavement Works** | 2027-06-02 → 2027-06-01 (-1d) | 2027-06-17 → 2027-06-16 (-1d) |  |
| CO-RD-PV-240 | Fixing of Curbstone for Sidewalks Pavement for Alignment-RD-03-2 | 2027-06-02 → 2027-06-01 (-1d) | 2027-06-09 → 2027-06-08 (-1d) | none → -107d |
| CO-RD-PV-250 | Fixing of Interlock Tiles for Sidewalks Pavement for Alignment-RD-03-2 | 2027-06-10 → 2027-06-09 (-1d) | 2027-06-17 → 2027-06-16 (-1d) | none → -107d |

| ID | Task | Start | Finish | Total float | Other |
| --- | --- | --- | --- | --- | --- |
| TS | **Traffic Signs Boards and Roads Marking** | 2027-06-19 → 2027-06-22 (+3d) | 2027-06-24 → 2027-06-28 (+4d) |  |  |
| CO-RD-F-RM-220 | Application of Road Marking Works For Road Works for Alignment-RD-03-2 | 2027-06-19 → 2027-06-22 (+3d) | 2027-06-21 → 2027-06-24 (+3d) | none → -111d |  |
| CO-RD-F-TS-160 | Installation Works of Traffic Signs Boards For Road Works for Alignment-RD-03-2 | 2027-06-22 → 2027-06-26 (+4d) | 2027-06-24 → 2027-06-28 (+4d) | none → -111d |  |
| 3 | **Finishes for Infrastructure Networks** | 2027-04-05 → 2027-03-16 (-20d) | 2027-06-12 → 2027-06-17 (+5d) |  |  |
| 11 | **Storm Drainage Network** | 2027-05-25 → 2027-05-31 (+6d) | 2027-06-12 → 2027-06-17 (+5d) |  |  |
| TF | **Testing and Finishes** | 2027-05-25 → 2027-05-31 (+6d) | 2027-06-12 → 2027-06-17 (+5d) |  |  |
| CO-SD-MH-TF-290 | Testing Works for Manholes of Storm Drainage Network for Alignment-RD-03-2 | 2027-05-25 → 2027-05-31 (+6d) | 2027-05-31 → 2027-06-06 (+6d) | none → -101d |  |
| CO-SD-CB-TF-260 | Testing Works for Catch Basins of Storm Drainage Network for Alignment-RD-03-2 | 2027-06-02 → 2027-06-08 (+6d) | 2027-06-12 → 2027-06-17 (+5d) | none → -111d |  |
| 14 | **Medium Voltage Network** | 2027-04-05 → 2027-03-16 (-20d) | 2027-04-11 → 2027-03-22 (-20d) |  |  |
| TT | **Termination and Testing Works** | 2027-04-05 → 2027-03-16 (-20d) | 2027-04-11 → 2027-03-22 (-20d) |  |  |
| CO-MV-TF-260 | Testing and Termination Works of Medium Voltage Network for Alignment-RD-03-2 | 2027-04-05 → 2027-03-16 (-20d) | 2027-04-11 → 2027-03-22 (-20d) | none → -52d |  |
| 6 | **Low Voltage Network** | 2027-04-28 → 2027-04-20 (-8d) | 2027-05-25 → 2027-05-11 (-14d) |  |  |
| TT | **Termination and Testing Works** | 2027-04-28 → 2027-04-20 (-8d) | 2027-05-25 → 2027-05-11 (-14d) |  |  |
| CON-LV-TT-190 | Testing and Termination Works for Distribution Pillars Units of Low Voltage Network for Alignment-RD-03-2 | 2027-04-28 → 2027-04-20 (-8d) | 2027-05-04 → 2027-04-26 (-8d) | none → -68d |  |
| CON-LV-TT-180 | Testing and Termination Works for Substation Low Voltage Panel Boards of Low Voltage Network for Alignment-RD-03-2 | 2027-05-12 → 2027-05-04 (-8d) | 2027-05-25 → 2027-05-11 (-14d) | none → -74d |  |
| 1 | **Earthing System Works** | 2027-05-05 → 2027-04-27 (-8d) | 2027-05-06 → 2027-04-28 (-8d) |  |  |
| CON-LV-ES-140 | Earthing System Works for Distribution Pillars Units of Low Voltage Network for Alignment-RD-03-2 | 2027-05-05 → 2027-04-27 (-8d) | 2027-05-06 → 2027-04-28 (-8d) | none → -63d |  |
| 12 | **Street Lighting Network** | 2027-04-20 → 2027-04-19 (-1d) | 2027-05-06 → 2027-05-10 (+4d) |  |  |
| TR | **Termination and Testing Works** | 2027-04-20 → 2027-04-19 (-1d) | 2027-05-06 → 2027-05-10 (+4d) |  |  |
| CO-SL-LP-530 | Installation Works for Lighting Fixtures With Drop Wire of Street Lighting Network for Alignment-RD-03-2 | 2027-04-20 → 2027-04-19 (-1d) | 2027-04-26 → 2027-04-25 (-1d) | none → -100d |  |
| CO-SL-TF-530 | Testing Works for Lighting Poles of Street Lighting Network for Alignment-RD-03-2 | 2027-05-01 → 2027-05-04 (+3d) | 2027-05-06 → 2027-05-10 (+4d) | none → -107d |  |
| ES | **Earthing System Works** | 2027-05-01 → 2027-05-04 (+3d) | 2027-05-05 → 2027-05-09 (+4d) |  |  |
| CO-SL-ES-300 | Install Earthing System Works for Lighting Poles of Street Lighting Network for Alignment-RD-03-2 | 2027-05-01 → 2027-05-04 (+3d) | 2027-05-03 → 2027-05-06 (+3d) | none → -72d |  |
| CO-SL-ES-310 | Install Earthing System Works for Lighting Panel Boards of Street Lighting Network for Alignment-RD-03-2 | 2027-05-04 → 2027-05-08 (+4d) | 2027-05-05 → 2027-05-09 (+4d) | none → -72d |  |
| 3 | **Telecom and Light Current Network** | 2027-05-22 → 2027-05-08 (-14d) | 2027-05-25 → 2027-05-11 (-14d) |  |  |
| 1 | **Testing and Finishes** | 2027-05-22 → 2027-05-08 (-14d) | 2027-05-25 → 2027-05-11 (-14d) |  |  |
| CO-TE-CTV-TF-320 | Testing and Interface modules with CCTV, Telephone, MSN and Access Control for Alignment-RD-03-2 | 2027-05-22 → 2027-05-08 (-14d) | 2027-05-25 → 2027-05-11 (-14d) | none → -84d |  |
| 4 | **Alignment-RD-03-3** | 2026-11-16 → 2026-11-23 (+7d) | 2027-06-05 → 2027-05-31 (-5d) |  |  |
| EW | **Earthworks** | 2026-11-16 → 2026-11-23 (+7d) | 2026-11-28 → 2026-12-05 (+7d) |  |  |
| EW | **Earthworks** | 2026-11-16 → 2026-11-23 (+7d) | 2026-11-28 → 2026-12-05 (+7d) |  |  |
| CO-EW-230 | Excavation and Backfilling Works Upto Design Level for Earthworks for Alignment-RD-03-3 | 2026-11-16 → 2026-11-23 (+7d) | 2026-11-28 → 2026-12-05 (+7d) | none → -115d |  |
| SD | **Storm Drainage Network** | 2026-12-16 → 2026-12-23 (+7d) | 2026-12-27 → 2027-01-03 (+7d) |  |  |
| ML | **Main Line Sections** | 2026-12-16 → 2026-12-23 (+7d) | 2026-12-27 → 2027-01-03 (+7d) |  |  |
| CO-SD-ML-200 | Trench Excavation and Bedding Works for Main Lines of Storm Drainage Network for Alignment-RD-03-3 | 2026-12-16 → 2026-12-23 (+7d) | 2026-12-19 → 2026-12-26 (+7d) | none → -111d |  |
| CO-SD-ML-210 | Pipes Laying Works for Main Lines of Storm Drainage Network for Alignment-RD-03-3 | 2026-12-20 → 2026-12-27 (+7d) | 2026-12-22 → 2026-12-29 (+7d) | none → -111d | resources Skilled Labor [48 h]; Unskilled Labor [24 h]; Plumber [24 h]; Excavator [24 h]; Depth Between 0m to 1.50m; Depth Between 1.50m to 2.50m; Depth Between 2.50m to 3.50m; Depth > 3.50m; Depth Between 1.50m to 2.50m [79.15]; Depth Between 3.50m to 4.50m; Depth > 4.50m; GRP Pipe, 900mm diameter with Depth Between 3.51m to 4.50m → Depth Between 0m to 1.50m; Depth Between 1.50m to 2.50m; Depth Between 2.50m to 3.50m; Depth Between 3.50m to 4.50m; Depth > 4.50m; Depth > 3.50m; GRP Pipe, 900mm diameter with Depth Between 3.51m to 4.50m; Skilled Labor [48 h]; Unskilled Labor [24 h]; Plumber [24 h]; Excavator [24 h]; Depth Between 1.50m to 2.50m [79.15] |
| CO-SD-ML-220 | Trench Backfilling and Compaction Works for Main Lines of Storm Drainage Network for Alignment-RD-03-3 | 2026-12-24 → 2026-12-31 (+7d) | 2026-12-27 → 2027-01-03 (+7d) | none → -112d |  |
| TSE | **Treated Sewage Effluent (Tse)** | 2026-12-28 → 2027-01-04 (+7d) | 2027-02-03 → 2027-02-10 (+7d) |  |  |
| CO-TSE-ML-300 | Trench Excavation and Bedding Works for Main Lines of Treated Sewage Effluent (Tse) for Alignment-RD-03-3 | 2026-12-28 → 2027-01-04 (+7d) | 2027-01-09 → 2027-01-16 (+7d) | none → -87d |  |
| CO-TSE-ML-310 | Pipes Laying Works for Main Lines of Treated Sewage Effluent (Tse) for Alignment-RD-03-3 | 2027-01-10 → 2027-01-17 (+7d) | 2027-01-21 → 2027-01-28 (+7d) | none → -87d |  |
| CO-TSE-ML-330 | Trench Backfilling and Compaction Works for Treated Sewage Effluent (Tse) for Alignment-RD-03-3 | 2027-01-23 → 2027-01-30 (+7d) | 2027-02-03 → 2027-02-10 (+7d) | none → -87d |  |
| PW | **Potable Water Network** | 2027-02-04 → 2027-02-11 (+7d) | 2027-03-16 → 2027-03-23 (+7d) |  |  |
| ML | **Main Line Sections** | 2027-02-04 → 2027-02-11 (+7d) | 2027-03-14 → 2027-03-21 (+7d) |  |  |
| CO-PW-ML-200 | Trench Excavation and Bedding Works for Main Lines of Potable Water Network for Alignment-RD-03-3 | 2027-02-04 → 2027-02-11 (+7d) | 2027-02-15 → 2027-02-22 (+7d) | none → -87d |  |
| CO-PW-ML-210 | Pipes Laying and accessories for Main Lines of Potable Water Network for Alignment-RD-03-3 | 2027-02-16 → 2027-02-23 (+7d) | 2027-02-27 → 2027-03-06 (+7d) | none → -87d |  |
| CO-PW-ML-220 | Trench Backfilling and Compaction Works for Main Lines of Potable Water Network for Alignment-RD-03-3 | 2027-02-28 → 2027-03-07 (+7d) | 2027-03-14 → 2027-03-21 (+7d) | none → -79d |  |
| VC | **Valve Chamber** | 2027-02-04 → 2027-02-11 (+7d) | 2027-03-16 → 2027-03-23 (+7d) |  |  |
| CO-PW-VC-290 | Excavation Works for Main Line Valves and Valve Chambers of Potable Water Network for Alignment-RD-03-3 | 2027-02-04 → 2027-02-11 (+7d) | 2027-02-15 → 2027-02-22 (+7d) | none → -65d |  |
| CO-PW-VC210 | Installation of Valve Chambers of Potable Water Network for Alignment-RD-03-3 | 2027-02-16 → 2027-02-23 (+7d) | 2027-02-27 → 2027-03-06 (+7d) | none → -65d |  |
| CO-PW-VC-300 | Installation Works for Valves of Potable Water Network for Alignment-RD-03-3 | 2027-02-28 → 2027-03-07 (+7d) | 2027-03-13 → 2027-03-20 (+7d) | none → -65d |  |
| CO-PW-VC-310 | Backfilling Works for Main Line Valves and Valve Chambers of Potable Water Network for Alignment-RD-03-3 | 2027-03-14 → 2027-03-21 (+7d) | 2027-03-16 → 2027-03-23 (+7d) | none → -65d |  |
| FH | **Fire Hydrant** | 2027-02-16 → 2027-02-23 (+7d) | 2027-03-16 → 2027-03-23 (+7d) |  |  |
| CO-PW-FH-230 | Excavation Works for Fire Hydrants of Potable Water Network for Alignment-RD-03-3 | 2027-02-16 → 2027-02-23 (+7d) | 2027-02-27 → 2027-03-06 (+7d) | none → -65d |  |
| CO-PW-FH-240 | Installation Works for Fire Hydrant of Potable Water Network for Alignment-RD-03-3 | 2027-02-28 → 2027-03-07 (+7d) | 2027-03-14 → 2027-03-21 (+7d) | none → -65d |  |
| CO-PW-FH-250 | Trench Backfilling and Compaction Works for Fire Hydrants of Potable Water Network for Alignment-RD-03-3 | 2027-03-15 → 2027-03-22 (+7d) | 2027-03-16 → 2027-03-23 (+7d) | none → -65d |  |
| IR | **Irrigation Network** | 2027-02-16 → 2027-02-23 (+7d) | 2027-03-16 → 2027-03-23 (+7d) |  |  |
| ML | **Main Line Pipes** | 2027-02-16 → 2027-02-23 (+7d) | 2027-03-16 → 2027-03-23 (+7d) |  |  |
| CO-IR-ML-350 | Trench Excavation and Bedding Works for Main Lines of Irrigation Network for Alignment-RD-03-3 | 2027-02-16 → 2027-02-23 (+7d) | 2027-02-27 → 2027-03-06 (+7d) | none → -87d |  |
| CO-IR-ML-360 | Pipes Laying Works for Main Lines of Irrigation Network for Alignment-RD-03-3 | 2027-02-28 → 2027-03-07 (+7d) | 2027-03-02 → 2027-03-13 (+11d) | none → -87d |  |
| CO-IR-ML-370 | Installation Works for Main Line Valves of Irrigation Network for Alignment-RD-03-3 | 2027-03-03 → 2027-03-14 (+11d) | 2027-03-06 → 2027-03-16 (+10d) | none → -87d |  |
| CO-IR-ML-390 | Installation Works for Bulbblers And Sprinkler and Irrigation Control System of Irrigation Network for Alignment-RD-03-3 | 2027-03-07 → 2027-03-17 (+10d) | 2027-03-13 → 2027-03-20 (+7d) | none → -87d |  |
| CO-IR-ML-380 | Trench Backfilling and Compaction Works for Main Lines of Irrigation Network for Alignment-RD-03-3 | 2027-03-14 → 2027-03-21 (+7d) | 2027-03-16 → 2027-03-23 (+7d) | none → -87d |  |
| MV | **Medium Voltage Network** | 2027-03-23 → 2027-03-22 (-1d) | 2027-04-05 → 2027-03-31 (-5d) |  |  |
| CW | **Cabling Works** | 2027-03-23 → 2027-03-22 (-1d) | 2027-04-05 → 2027-03-31 (-5d) |  |  |
| CO-MV-ML-340 | Trench Excavation and Bedding Works for Medium Voltage Network for Alignment-RD-03-3 | 2027-03-23 → 2027-03-22 (-1d) | 2027-03-25 → 2027-03-24 (-1d) | none → -79d |  |
| CO-MV-ML-350 | Duct Laying Works for Medium Voltage Network for Alignment-RD-03-3 | 2027-03-30 → 2027-03-25 (-5d) | 2027-04-01 → 2027-03-28 (-4d) | none → -79d |  |
| CO-MV-ML-360 | Trench Backfilling and Compaction Works for Medium Voltage Network for Alignment-RD-03-3 | 2027-04-03 → 2027-03-29 (-5d) | 2027-04-05 → 2027-03-31 (-5d) | none → -79d |  |
| LV | **Low Voltage Network** | 2027-04-06 → 2027-04-01 (-5d) | 2027-05-08 → 2027-05-03 (-5d) |  |  |
| MLVC | **Main Low Voltage Cables Works ( Cable 300 MM )** | 2027-04-06 → 2027-04-01 (-5d) | 2027-04-26 → 2027-04-21 (-5d) |  |  |
| CON-LV-ML-190 | Trench Excavation and Bedding Works for Main Cable of Low Voltage Network for Alignment-RD-03-3 | 2027-04-06 → 2027-04-01 (-5d) | 2027-04-13 → 2027-04-08 (-5d) | none → -79d |  |
| CON-LV-ML-200 | Cable Laying Works for Main Cable of Low Voltage Network for Alignment-RD-03-3 | 2027-04-14 → 2027-04-10 (-4d) | 2027-04-21 → 2027-04-17 (-4d) | none → -79d |  |

| ID | Task | Start | Finish | Total float | Other |
| --- | --- | --- | --- | --- | --- |
| CON-LV-ML-210 | Trench Backfilling and Compaction Works for Main Cable of Low Voltage Network for Alignment-RD-03-3 | 2027-04-22 → 2027-04-18 (-4d) | 2027-04-26 → 2027-04-21 (-5d) | none → -73d |  |
| SLVC | **Service Low Voltage Cables Works ( Cable 70 MM )** | 2027-04-14 → 2027-04-10 (-4d) | 2027-05-03 → 2027-04-28 (-5d) |  |  |
| CON-LV-HC-190 | Trench Excavation and Bedding Works for Service Cable of Low Voltage Network for Alignment-RD-03-3 | 2027-04-14 → 2027-04-10 (-4d) | 2027-04-21 → 2027-04-17 (-4d) | none → -79d |  |
| CON-LV-HC-200 | Cable Laying Works for Service Cable of Low Voltage Network for Alignment-RD-03-3 | 2027-04-22 → 2027-04-18 (-4d) | 2027-04-29 → 2027-04-25 (-4d) | none → -79d |  |
| CON-LV-HC-210 | Trench Backfilling and Compaction Works for Service Cable of Low Voltage Network for Alignment-RD-03-3 | 2027-05-01 → 2027-04-26 (-5d) | 2027-05-03 → 2027-04-28 (-5d) | none → -79d |  |
| DP | **Distribution Pillars Works** | 2027-05-04 → 2027-04-29 (-5d) | 2027-05-08 → 2027-05-03 (-5d) |  |  |
| CON-LV-DP-190 | Installation Works for Distribution Pillar Units of Low Voltage Network for Alignment-RD-03-3 | 2027-05-04 → 2027-04-29 (-5d) | 2027-05-08 → 2027-05-03 (-5d) | none → -75d |  |
| SL | **Street Lighting Network** | 2027-04-06 → 2027-04-01 (-5d) | 2027-04-26 → 2027-04-21 (-5d) |  |  |
| LP | **Lighting Poles Works** | 2027-04-06 → 2027-04-01 (-5d) | 2027-04-26 → 2027-04-21 (-5d) |  |  |
| CO-SL-LP-450 | Installation Works for Lighting Poles Foundation of Street Lighting Network for Alignment-RD-03-3 | 2027-04-06 → 2027-04-01 (-5d) | 2027-04-12 → 2027-04-07 (-5d) | none → -77d |  |
| CO-SL-LP-460 | Installation Works for Lighting Poles of Street Lighting Network for Alignment-RD-03-3 | 2027-04-13 → 2027-04-08 (-5d) | 2027-04-19 → 2027-04-14 (-5d) | none → -77d |  |
| CO-SL-LP-480 | Backfilling Works for Lighting Poles of Street Lighting Network for Alignment-RD-03-3 | 2027-04-20 → 2027-04-15 (-5d) | 2027-04-26 → 2027-04-21 (-5d) | none → -77d |  |
| CW | **Cabling Works** | 2027-04-20 → 2027-04-15 (-5d) | 2027-04-26 → 2027-04-21 (-5d) |  |  |
| CO-SL-CL-350 | Cable Laying Works for Street Lighting Network for Alignment-RD-03-3 | 2027-04-20 → 2027-04-15 (-5d) | 2027-04-26 → 2027-04-21 (-5d) | none → -77d |  |
| CO-SL-CL-360 | Trench Backfilling and Compaction Works for Street Lighting Network for Alignment-RD-03-3 | 2027-04-20 → 2027-04-15 (-5d) | 2027-04-26 → 2027-04-21 (-5d) | none → -77d |  |
| TE | **Telecom and Light Current Network** | 2027-04-15 → 2027-04-13 (-2d) | 2027-05-20 → 2027-05-10 (-10d) |  |  |
| PD | **Ducts Works** | 2027-05-04 → 2027-04-29 (-5d) | 2027-05-20 → 2027-05-10 (-10d) |  |  |
| CO-TE-DW-230 | Pipes Laying Works for Ducts of Telecom Network for Alignment-RD-03-3 | 2027-05-04 → 2027-04-29 (-5d) | 2027-05-10 → 2027-05-05 (-5d) | none → -79d |  |
| CO-TE-DW-240 | Trench Backfilling and Compaction Works for Ducts of Telecom Network for Alignment-RD-03-3 | 2027-05-11 → 2027-05-06 (-5d) | 2027-05-20 → 2027-05-10 (-10d) | none → -79d |  |
| MH | **Manholes Works** | 2027-04-15 → 2027-04-13 (-2d) | 2027-04-24 → 2027-04-21 (-3d) |  |  |
| CO-TE-MH-230 | Excavation Works for Manholes of Telecom Network for Alignment-RD-03-3 | 2027-04-15 → 2027-04-13 (-2d) | 2027-04-17 → 2027-04-14 (-3d) | none → -78d |  |
| CO-TE-MH-240 | Installation Works for Manholes of Telecom Network for Alignment-RD-03-3 | 2027-04-18 → 2027-04-15 (-3d) | 2027-04-20 → 2027-04-18 (-2d) | none → -78d |  |
| CO-TE-MH-250 | Backfilling Works for Manholes of Telecom Network for Alignment-RD-03-3 | 2027-04-21 → 2027-04-19 (-2d) | 2027-04-24 → 2027-04-21 (-3d) | none → -78d |  |
| DD | **CCTV, Telephone, MSN, ACs System Works** | 2027-04-25 → 2027-04-22 (-3d) | 2027-04-27 → 2027-04-25 (-2d) |  |  |
| CO-TE-CTV-210 | Installation of CCTV, Telephone, ACS and MSN Systems Cables for Alignment-RD-03-3 | 2027-04-25 → 2027-04-22 (-3d) | 2027-04-27 → 2027-04-25 (-2d) | none → -78d |  |
| RD | **Road Works** |  | 2027-05-25 → 2027-05-27 (+2d) |  |  |
| TS | **Traffic Signs Boards and Roads Marking** |  | 2027-05-25 → 2027-05-27 (+2d) |  |  |
| CO-RD-F-TS-150 | Installation Works of Traffic Signs Boards For Road Works for Alignment-RD-03-3 | 2027-05-22 → 2027-05-24 (+2d) | 2027-05-25 → 2027-05-27 (+2d) | none → -84d |  |
| 3 | **Finishes for Infrastructure Networks** | 2027-04-06 → 2027-04-01 (-5d) | 2027-06-05 → 2027-05-31 (-5d) |  |  |
| 11 | **Storm Drainage Network** | 2027-05-13 → 2027-05-26 (+13d) | 2027-05-24 → 2027-05-31 (+7d) |  |  |
| TF | **Testing and Finishes** | 2027-05-13 → 2027-05-26 (+13d) | 2027-05-24 → 2027-05-31 (+7d) |  |  |
| CO-SD-ML-TF-130 | Testing Work for Pipes of Storm Drainage Network for Alignment-RD-03-3 | 2027-05-13 → 2027-05-26 (+13d) | 2027-05-24 → 2027-05-31 (+7d) | none → -106d |  |
| 9 | **Potable Water Network** | 2027-05-04 → 2027-04-26 (-8d) | 2027-05-11 → 2027-05-03 (-8d) |  |  |
| TF | **Testing and Finishes** | 2027-05-04 → 2027-04-26 (-8d) | 2027-05-11 → 2027-05-03 (-8d) |  |  |
| CO-PW-TF-200 | Fire Hydrant Finishies (S.Box + Safety + Marker Post ) of Potable Water Network for Alignment-RD-03-3 | 2027-05-04 → 2027-04-26 (-8d) | 2027-05-06 → 2027-04-28 (-8d) | none → -90d |  |
| CO-PW-TF-190 | Testing of Potable Water Network for Alignment-RD-03-3 | 2027-05-08 → 2027-04-29 (-9d) | 2027-05-10 → 2027-05-02 (-8d) | none → -78d |  |
| CO-PW-TF-210 | Final Finishes works and Covers for Valves and Valve Chambers for Alignment-RD-03-3 | 2027-05-08 → 2027-04-29 (-9d) | 2027-05-11 → 2027-05-03 (-8d) | none → -83d |  |
| 1 | **Treated Sewage Effluent (Tse)** | 2027-05-30 → 2027-05-22 (-8d) | 2027-06-05 → 2027-05-27 (-9d) |  |  |
| TF | **Testing and Finishes** | 2027-05-30 → 2027-05-22 (-8d) | 2027-06-05 → 2027-05-27 (-9d) |  |  |
| CO-TSE-TF-200 | Final Testing (pressure tests) of Treated Sewage Effluent (Tse) for Alignment-RD-03-3 | 2027-05-30 → 2027-05-22 (-8d) | 2027-06-05 → 2027-05-27 (-9d) | none → -89d |  |
| 13 | **Irrigation Network** | 2027-05-08 → 2027-04-29 (-9d) | 2027-05-13 → 2027-05-05 (-8d) |  |  |
| TF | **Testing and Finishes** | 2027-05-08 → 2027-04-29 (-9d) | 2027-05-13 → 2027-05-05 (-8d) |  |  |
| CO-IR-TF-210 | Final Testing (pressure tests) of Irrigation Network for Alignment-RD-03-3 | 2027-05-08 → 2027-04-29 (-9d) | 2027-05-13 → 2027-05-05 (-8d) | none → -75d |  |
| 14 | **Medium Voltage Network** | 2027-04-06 → 2027-04-01 (-5d) | 2027-04-12 → 2027-04-07 (-5d) |  |  |
| TT | **Termination and Testing Works** | 2027-04-06 → 2027-04-01 (-5d) | 2027-04-12 → 2027-04-07 (-5d) |  |  |
| CO-MV-TF-250 | Testing and Termination Works of Medium Voltage Network for Alignment-RD-03-3 | 2027-04-06 → 2027-04-01 (-5d) | 2027-04-12 → 2027-04-07 (-5d) | none → -72d |  |
| 6 | **Low Voltage Network** | 2027-05-09 → 2027-05-04 (-5d) | 2027-05-20 → 2027-05-10 (-10d) |  |  |
| TT | **Termination and Testing Works** | 2027-05-09 → 2027-05-04 (-5d) | 2027-05-20 → 2027-05-10 (-10d) |  |  |
| CON-LV-TT-160 | Testing and Termination Works for Substation Low Voltage Panel Boards of Low Voltage Network for Alignment-RD-03-3 | 2027-05-09 → 2027-05-04 (-5d) | 2027-05-20 → 2027-05-10 (-10d) | none → -73d |  |
| 12 | **Street Lighting Network** | 2027-05-04 → 2027-05-03 (-1d) | 2027-05-29 → 2027-05-30 (+1d) |  |  |
| TR | **Termination and Testing Works** | 2027-05-04 → 2027-05-03 (-1d) | 2027-05-29 → 2027-05-30 (+1d) |  |  |
| CO-SL-LP-470 | Installation Works for Lighting Fixtures With Drop Wire of Street Lighting Network for Alignment-RD-03-3 | 2027-05-04 → 2027-05-03 (-1d) | 2027-05-10 → 2027-05-09 (-1d) | none → -86d |  |
| CO-SL-TF-490 | Testing Works for Lighting Poles of Street Lighting Network for Alignment-RD-03-3 | 2027-05-23 → 2027-05-24 (+1d) | 2027-05-29 → 2027-05-30 (+1d) | none → -85d |  |
| EX | **External** |  | 2027-05-24 → 2027-05-26 (+2d) |  |  |
| 2 | **External Road - 1 - 1** |  | 2027-05-23 → 2027-05-22 (-1d) |  |  |
| EW | **Earthworks** |  | 2027-01-04 → 2026-12-15 (-20d) |  |  |
| EW | **Earthworks** |  | 2027-01-04 → 2026-12-15 (-20d) |  |  |
| CO-EW-250 | Excavation and Backfilling Works Upto Design Level for Earthworks for External Road - 1 - 1(Completed) |  |  |  | resources Skilled Labor [568.55 h]; Unskilled Labor [568.55 h]; Dozer [568.55 h]; Water Tanker [568.55 h]; Embankments to the Site and Roads (including Roads , Plots and Pond) [79314]; Excavations (including Roads , Plots and Pond) [4514] → Skilled Labor [568.55 h]; Unskilled Labor [568.55 h]; Dozer [568.55 h]; Water Tanker [568.55 h]; Excavations (including Roads , Plots and Pond) [4514]; Embankments to the Site and Roads (including Roads , Plots and Pond) [79314] |
| CO-EW-250_R | Excavation and Backfilling Works Upto Design Level for Earthworks for External Road - 1 - 1(Remaining) | 2026-12-27 → 2026-12-07 (-20d) | 2027-01-04 → 2026-12-15 (-20d) | none → -43d | resources Skilled Labor [487.45 h]; Unskilled Labor [487.45 h]; Dozer [487.45 h]; Water Tanker [487.45 h]; Embankments to the Site and Roads (including Roads , Plots and Pond) [19386]; Excavations (including Roads , Plots and Pond) [1287] → Skilled Labor [487.45 h]; Unskilled Labor [487.45 h]; Dozer [487.45 h]; Water Tanker [487.45 h]; Excavations (including Roads , Plots and Pond) [1287]; Embankments to the Site and Roads (including Roads , Plots and Pond) [19386] |
| RD | **Road Works** |  | 2027-05-23 → 2027-05-22 (-1d) |  |  |
| 3 | **Road 01** |  | 2027-05-23 → 2027-05-22 (-1d) |  |  |
| RD | **Pre-Bituminous Construction** |  | 2027-04-22 → 2027-04-15 (-7d) |  |  |
| CO-RD-PB-240 | Subgrade Layer for Road Works for External Road - 1 - 1 |  | 2027-04-12 → 2027-04-05 (-7d) | none → -74d |  |
| CO-RD-PB-250 | Aggregate Base Course Layer for Road Works for External Road - 1 - 1 |  | 2027-04-22 → 2027-04-15 (-7d) | none → -74d |  |
| 1 | **Bituminous Construction** | 2027-04-24 → 2027-04-17 (-7d) | 2027-05-02 → 2027-04-25 (-7d) |  |  |
| CO-RD-B-260 | Bituminous Base Courses Layers for Road Works for External Road - 1 - 1 | 2027-04-24 → 2027-04-17 (-7d) | 2027-04-27 → 2027-04-20 (-7d) | none → -74d |  |
| CON-RD-MR-250 | Preparation of Asphaltic Wearing Course Layer for Roads Network for External Road - 1 - 1 | 2027-04-28 → 2027-04-21 (-7d) | 2027-05-02 → 2027-04-25 (-7d) | none → -65d |  |
| LS | **Pavement Works** | 2027-04-28 → 2027-04-21 (-7d) | 2027-05-13 → 2027-05-06 (-7d) |  |  |
| CO-RD-PV-260 | Fixing of Curbstone for Sidewalks Pavement for External Road - 1 - 1 | 2027-04-28 → 2027-04-21 (-7d) | 2027-05-06 → 2027-04-29 (-7d) | none → -74d |  |
| CO-RD-PV-270 | Fixing of Interlock Tiles for Sidewalks Pavement for External Road - 1 - 1 | 2027-05-08 → 2027-05-01 (-7d) | 2027-05-13 → 2027-05-06 (-7d) | none → -74d |  |

| ID | Task | Start | Finish | Total float | Other |
| --- | --- | --- | --- | --- | --- |
| TS | **Traffic Signs Boards and Roads Marking** | 2027-05-20 → 2027-05-08 (-12d) | 2027-05-23 → 2027-05-22 (-1d) |  |  |
| CO-RD-F-RM-230 | Application of Road Marking Works For Road Works for External Road - 1 - 1 | 2027-05-20 → 2027-05-08 (-12d) | 2027-05-22 → 2027-05-09 (-13d) | none → -74d |  |
| CO-RD-F-TS-170 | Installation Works of Traffic Signs Boards For Road Works for External Road - 1 - 1 | 2027-05-23 → 2027-05-22 (-1d) | 2027-05-23 → 2027-05-22 (-1d) | none → -79d |  |
| EW | **Earthworks** |  | 2027-01-25 → 2027-01-05 (-20d) |  |  |
| EW | **Earthworks** |  | 2027-01-25 → 2027-01-05 (-20d) |  |  |
| CO-EW-280 | Excavation and Backfilling Works Upto Design Level for Earthworks for External Road - 1 - 2(Completed) |  |  |  | resources Skilled Labor [817.3 h]; Unskilled Labor [817.3 h]; Dozer [817.3 h]; Water Tanker [817.3 h]; Embankments to the Site and Roads (including Roads , Plots and Pond) [17716.8]; Excavations (including Roads , Plots and Pond) [6184] → Skilled Labor [817.3 h]; Unskilled Labor [817.3 h]; Dozer [817.3 h]; Water Tanker [817.3 h]; Excavations (including Roads , Plots and Pond) [6184]; Embankments to the Site and Roads (including Roads , Plots and Pond) [17716.8] |
| CO-EW-280_R | Excavation and Backfilling Works Upto Design Level for Earthworks for External Road - 1 - 2(Remaining) |  | 2027-01-25 → 2027-01-05 (-20d) | none → -43d | resources Skilled Labor [862.7 h]; Unskilled Labor [862.7 h]; Dozer [862.7 h]; Water Tanker [862.7 h]; Embankments to the Site and Roads (including Roads , Plots and Pond) [127183]; Excavations (including Roads , Plots and Pond) [2333] → Skilled Labor [862.7 h]; Unskilled Labor [862.7 h]; Dozer [862.7 h]; Water Tanker [862.7 h]; Excavations (including Roads , Plots and Pond) [2333]; Embankments to the Site and Roads (including Roads , Plots and Pond) [127183] |
| RD | **Road Works** | 2027-04-04 → 2027-03-28 (-7d) |  |  |  |
| 3 | **Road 01** | 2027-04-04 → 2027-03-28 (-7d) |  |  |  |
| RD | **Pre-Bituminous Construction** | 2027-04-04 → 2027-03-28 (-7d) | 2027-04-17 → 2027-04-10 (-7d) |  |  |
| CO-RD-PB-300 | Subgrade Layer for Road Works for External Road - 1 - 2 | 2027-04-04 → 2027-03-28 (-7d) | 2027-04-10 → 2027-04-03 (-7d) | none → -74d |  |
| CO-RD-PB-310 | Aggregate Base Course Layer for Road Works for External Road - 1 - 2 | 2027-04-11 → 2027-04-04 (-7d) | 2027-04-17 → 2027-04-10 (-7d) | none → -74d |  |
| 1 | **Bituminous Construction** | 2027-04-18 → 2027-04-11 (-7d) | 2027-04-29 → 2027-04-22 (-7d) |  |  |
| CO-RD-B-320 | Bituminous Base Courses Layers for Road Works for External Road - 1 - 2 | 2027-04-18 → 2027-04-11 (-7d) | 2027-04-25 → 2027-04-18 (-7d) | none → -74d |  |
| CON-RD-MR-310 | Preparation of Asphaltic Wearing Course Layer for Roads Network for External Road - 1 - 2 | 2027-04-26 → 2027-04-19 (-7d) | 2027-04-29 → 2027-04-22 (-7d) | none → -66d |  |
| LS | **Pavement Works** | 2027-04-27 → 2027-04-19 (-8d) | 2027-05-10 → 2027-05-02 (-8d) |  |  |
| CO-RD-PV-320 | Fixing of Curbstone for Sidewalks Pavement for External Road - 1 - 2 | 2027-04-27 → 2027-04-19 (-8d) | 2027-05-03 → 2027-04-25 (-8d) | none → -74d |  |
| CO-RD-PV-330 | Fixing of Interlock Tiles for Sidewalks Pavement for External Road - 1 - 2 | 2027-05-04 → 2027-04-26 (-8d) | 2027-05-10 → 2027-05-02 (-8d) | none → -74d |  |
| TS | **Traffic Signs Boards and Roads Marking** | 2027-05-11 → 2027-05-03 (-8d) |  |  |  |
| CO-RD-F-RM-260 | Application of Road Marking Works For Road Works for External Road - 1 - 2 | 2027-05-11 → 2027-05-03 (-8d) | 2027-05-20 → 2027-05-06 (-14d) | none → -74d |  |
| 1 | **External Road - 2** |  | 2027-05-24 → 2027-05-23 (-1d) |  |  |
| EW | **Earthworks** |  | 2027-02-18 → 2027-02-14 (-4d) |  |  |
| EW | **Earthworks** |  | 2027-02-18 → 2027-02-14 (-4d) |  |  |
| CO-EW-260 | Excavation and Backfilling Works Upto Design Level for Earthworks for External Road - 2(Completed) |  |  |  | resources Skilled Labor [327.95 h]; Unskilled Labor [327.95 h]; Dozer [327.95 h]; Water Tanker [327.95 h]; Embankments to the Site and Roads (including Roads , Plots and Pond) [40450]; Excavations (including Roads , Plots and Pond) [2377] → Skilled Labor [327.95 h]; Unskilled Labor [327.95 h]; Dozer [327.95 h]; Water Tanker [327.95 h]; Excavations (including Roads , Plots and Pond) [2377]; Embankments to the Site and Roads (including Roads , Plots and Pond) [40450] |
| CO-EW-260_R | Excavation and Backfilling Works Upto Design Level for Earthworks for External Road - 2(Remaining) | 2027-01-26 → 2027-01-21 (-5d) | 2027-02-18 → 2027-02-14 (-4d) | none → -56d | resources Skilled Labor [536.05 h]; Unskilled Labor [536.05 h]; Dozer [536.05 h]; Water Tanker [536.05 h]; Embankments to the Site and Roads (including Roads , Plots and Pond) [30950]; Excavations (including Roads , Plots and Pond) [1820] → Skilled Labor [536.05 h]; Unskilled Labor [536.05 h]; Dozer [536.05 h]; Water Tanker [536.05 h]; Excavations (including Roads , Plots and Pond) [1820]; Embankments to the Site and Roads (including Roads , Plots and Pond) [30950] |
| RD | **Road Works** |  | 2027-05-24 → 2027-05-23 (-1d) |  |  |
| 3 | **Road 01** |  | 2027-05-24 → 2027-05-23 (-1d) |  |  |
| RD | **Pre-Bituminous Construction** |  | 2027-04-04 → 2027-03-28 (-7d) |  |  |
| CO-RD-PB-260 | Subgrade Layer for Road Works for External Road - 2 |  | 2027-04-04 → 2027-03-28 (-7d) | none → -75d |  |
| CO-RD-PB-270 | Aggregate Base Course Layer for Road Works for External Road - 2 |  | 2027-04-04 → 2027-03-28 (-7d) | none → -75d |  |
| 1 | **Bituminous Construction** | 2027-04-05 → 2027-03-29 (-7d) | 2027-04-27 → 2027-04-20 (-7d) |  |  |
| CO-RD-B-280 | Bituminous Base Courses Layers for Road Works for External Road - 2 | 2027-04-05 → 2027-03-29 (-7d) | 2027-04-15 → 2027-04-08 (-7d) | none → -75d |  |
| CON-RD-MR-270 | Preparation of Asphaltic Wearing Course Layer for Roads Network for External Road - 2 | 2027-04-17 → 2027-04-10 (-7d) | 2027-04-27 → 2027-04-20 (-7d) | none → -73d |  |
| LS | **Pavement Works** | 2027-04-27 → 2027-04-10 (-17d) | 2027-05-06 → 2027-04-19 (-17d) |  |  |
| CO-RD-PV-280 | Fixing of Curbstone for Sidewalks Pavement for External Road - 2 | 2027-04-27 → 2027-04-10 (-17d) | 2027-05-06 → 2027-04-19 (-17d) | none → -66d |  |
| CO-RD-PV-290 | Fixing of Interlock Tiles for Sidewalks Pavement for External Road - 2 | 2027-04-27 → 2027-04-10 (-17d) | 2027-05-06 → 2027-04-19 (-17d) | none → -66d |  |
| TS | **Traffic Signs Boards and Roads Marking** | 2027-05-08 → 2027-05-03 (-5d) | 2027-05-24 → 2027-05-23 (-1d) |  |  |
| CO-RD-F-RM-240 | Application of Road Marking Works For Road Works for External Road - 2 | 2027-05-08 → 2027-05-03 (-5d) | 2027-05-24 → 2027-05-13 (-11d) | none → -77d |  |
| CO-RD-F-TS-180 | Installation Works of Traffic Signs Boards For Road Works for External Road - 2 | 2027-05-10 → 2027-05-22 (+12d) | 2027-05-11 → 2027-05-23 (+12d) | none → -83d |  |
| 3 | **External Road - 3** |  | 2027-05-24 → 2027-05-26 (+2d) |  |  |
| EW | **Earthworks** |  | 2027-02-27 → 2027-02-22 (-5d) |  |  |
| EW | **Earthworks** |  | 2027-02-27 → 2027-02-22 (-5d) |  |  |
| CO-EW-270 | Excavation and Backfilling Works Upto Design Level for Earthworks for External Road - 3(Completed) |  |  |  | resources Skilled Labor [695.48 h]; Unskilled Labor [695.48 h]; Dozer [695.48 h]; Water Tanker [695.48 h]; Embankments to the Site and Roads (including Roads , Plots and Pond) [90238]; Excavations (including Roads , Plots and Pond) [5304] → Skilled Labor [695.48 h]; Unskilled Labor [695.48 h]; Dozer [695.48 h]; Water Tanker [695.48 h]; Excavations (including Roads , Plots and Pond) [5304]; Embankments to the Site and Roads (including Roads , Plots and Pond) [90238] |
| CO-EW-270_R | Excavation and Backfilling Works Upto Design Level for Earthworks for External Road - 3(Remaining) |  | 2027-02-27 → 2027-02-22 (-5d) | none → -56d | resources Skilled Labor [1152.52 h]; Unskilled Labor [1152.52 h]; Dozer [1152.52 h]; Water Tanker [1152.52 h]; Embankments to the Site and Roads (including Roads , Plots and Pond) [70412]; Excavations (including Roads , Plots and Pond) [4138] → Skilled Labor [1152.52 h]; Unskilled Labor [1152.52 h]; Dozer [1152.52 h]; Water Tanker [1152.52 h]; Excavations (including Roads , Plots and Pond) [4138]; Embankments to the Site and Roads (including Roads , Plots and Pond) [70412] |
| TE | **Telecom and Light Current Network** | 2027-02-09 → 2027-02-02 (-7d) | 2027-04-03 → 2027-03-27 (-7d) |  |  |
| MH | **Manholes Works** | 2027-02-09 → 2027-02-02 (-7d) | 2027-03-27 → 2027-03-20 (-7d) |  |  |
| CO-TE-MH-290 | Excavation Works for Manholes of Telecom Network for External Road - 3 | 2027-02-09 → 2027-02-02 (-7d) | 2027-03-01 → 2027-02-22 (-7d) | none → -75d |  |
| CO-TE-MH-300 | Installation Works for Manholes of Telecom Network for External Road - 3 | 2027-03-02 → 2027-02-23 (-7d) | 2027-03-27 → 2027-03-20 (-7d) | none → -75d |  |
| CO-TE-MH-310 | Backfilling Works for Manholes of Telecom Network for External Road - 3 | 2027-03-21 → 2027-03-14 (-7d) | 2027-03-27 → 2027-03-20 (-7d) | none → -75d |  |
| 1 | **Testing and Finishes** | 2027-03-28 → 2027-03-21 (-7d) | 2027-04-03 → 2027-03-27 (-7d) |  |  |
| CO-TE-CTV-TF-360 | Testing and Interface modules with Telecom for External Road - 3 | 2027-03-28 → 2027-03-21 (-7d) | 2027-04-03 → 2027-03-27 (-7d) | none → -75d |  |
| RD | **Road Works** |  | 2027-05-24 → 2027-05-26 (+2d) |  |  |
| 3 | **Road 01** |  | 2027-05-24 → 2027-05-26 (+2d) |  |  |
| RD | **Pre-Bituminous Construction** |  | 2027-04-12 → 2027-04-05 (-7d) |  |  |
| CO-RD-PB-280 | Subgrade Layer for Road Works for External Road - 3 |  | 2027-04-03 → 2027-03-27 (-7d) | none → -74d |  |
| CO-RD-PB-290 | Aggregate Base Course Layer for Road Works for External Road - 3 |  | 2027-04-12 → 2027-04-05 (-7d) | none → -72d |  |
| 1 | **Bituminous Construction** | 2027-04-17 → 2027-04-10 (-7d) | 2027-05-12 → 2027-05-05 (-7d) |  |  |
| CO-RD-B-300 | Bituminous Base Courses Layers for Road Works for External Road - 3 | 2027-04-17 → 2027-04-10 (-7d) | 2027-04-29 → 2027-04-22 (-7d) | none → -75d |  |
| CON-RD-MR-290 | Preparation of Asphaltic Wearing Course Layer for Roads Network for External Road - 3 | 2027-05-01 → 2027-04-24 (-7d) | 2027-05-12 → 2027-05-05 (-7d) | none → -75d |  |
| LS | **Pavement Works** | 2027-05-08 → 2027-04-24 (-14d) | 2027-05-10 → 2027-04-26 (-14d) |  |  |
| CO-RD-PV-300 | Fixing of Curbstone for Sidewalks Pavement for External Road - 3 | 2027-05-08 → 2027-04-24 (-14d) | 2027-05-10 → 2027-04-26 (-14d) | none → -67d |  |
| CO-RD-PV-310 | Fixing of Interlock Tiles for Sidewalks Pavement for External Road - 3 | 2027-05-08 → 2027-04-24 (-14d) | 2027-05-10 → 2027-04-26 (-14d) | none → -64d |  |
| TS | **Traffic Signs Boards and Roads Marking** | 2027-05-13 → 2027-05-06 (-7d) | 2027-05-24 → 2027-05-26 (+2d) |  |  |
| CO-RD-F-RM-250 | Application of Road Marking Works For Road Works for External Road - 3 | 2027-05-13 → 2027-05-06 (-7d) | 2027-05-24 → 2027-05-11 (-13d) | none → -75d |  |
| CO-RD-F-TS-190 | Installation Works of Traffic Signs Boards For Road Works for External Road - 3 | 2027-05-13 → 2027-05-24 (+11d) | 2027-05-22 → 2027-05-26 (+4d) | none → -83d |  |
| GEN | **Superstructure Work** |  | 2027-06-30 → 2027-06-24 (-6d) |  |  |
| 4 | **Utility Buildings** |  | 2027-06-30 → 2027-06-24 (-6d) |  |  |
| 4 | **Water Pump Station** |  | 2027-06-30 → 2027-06-24 (-6d) |  |  |
| 1 | **Civil work** |  | 2026-12-22 → 2026-12-01 (-21d) |  |  |
| 1 | **SubStructure** |  | 2026-11-22 → 2026-11-21 (-1d) |  |  |

| ID | Task | Start | Finish | Complete | Total float |
| --- | --- | --- | --- | --- | --- |
| CO-UB-PS-160 | Backfilling and compaction work for pump station | 2026-11-18 → 2026-11-17 (-1d) | 2026-11-22 → 2026-11-21 (-1d) |  | none → -53d |
| 2 | **Super structure** |  | 2026-12-22 → 2026-12-01 (-21d) |  |  |
| CO-UB-PS-200 | curing and deshuttering formwork for Wall columns | 2026-11-23 → 2026-11-02 A (-21d) | 2026-11-30 → 2026-11-03 A (-27d) | 0% → 100% |  |
| CO-UB-PS-210 | Waterproofing for Walls columns | 2026-12-01 → 2026-11-02 A (-29d) | 2026-12-02 → 2026-11-04 A (-28d) | 0% → 100% |  |
| CO-UB-PS-220 | Formwork for pump roof | 2026-12-03 → 2026-11-04 A (-29d) | 2026-12-07 → 2026-11-07 A (-30d) | 0% → 100% |  |
| CO-UB-PS-230 | Steel fixing for pump roof | 2026-12-08 → 2026-11-07 A (-31d) | 2026-12-12 → 2026-11-09 A (-33d) | 0% → 100% |  |
| CO-UB-PS-240 | pouring for pump roof | 2026-12-13 → 2026-11-22 (-21d) | 2026-12-14 → 2026-11-23 (-21d) |  | none → -53d |
| CO-UB-PS-250 | curing and deshuttering formwork for pump roof | 2026-12-15 → 2026-11-24 (-21d) | 2026-12-22 → 2026-12-01 (-21d) |  | none → -53d |
| 2 | **Architectural work** | 2026-12-23 → 2026-12-02 (-21d) | 2027-01-26 → 2027-01-05 (-21d) |  |  |
| CO-UB-PS-260 | Executing Masonry Works for Water Pump station building | 2026-12-23 → 2026-12-02 (-21d) | 2026-12-30 → 2026-12-09 (-21d) |  | none → -53d |
| CO-UB-PS-270 | Executing Plastering Works for Pump station building | 2026-12-31 → 2026-12-10 (-21d) | 2027-01-07 → 2026-12-17 (-21d) |  | none → -53d |
| CO-UB-PS-280 | Executing Painting and Finishes Works for Pump station building | 2027-01-09 → 2026-12-19 (-21d) | 2027-01-17 → 2026-12-27 (-21d) |  | none → -53d |
| CO-UB-PS-320 | Doors and windows Fixing &Stair Tiles | 2027-01-18 → 2026-12-28 (-21d) | 2027-01-26 → 2027-01-05 (-21d) |  | none → -53d |
| 4 | **Mechanical work** | 2027-05-20 → 2027-01-14 (-126d) | 2027-06-30 → 2027-06-24 (-6d) |  |  |
| CO-UB-PS-340 | Executing HVAC System for Water Pump station building | 2027-05-20 → 2027-01-14 (-126d) | 2027-05-31 → 2027-01-25 (-126d) |  | none → -12d |
| CO-UB-PS-360 | Executing Fire fighting institution works(piping and wire installation) for Water Pump station building | 2027-06-01 → 2027-05-26 (-6d) | 2027-06-12 → 2027-06-06 (-6d) |  | none → -107d |
| CO-UB-PS-380 | Executing Plummbing works for Water Pump station building | 2027-06-13 → 2027-06-07 (-6d) | 2027-06-23 → 2027-06-17 (-6d) |  | none → -107d |
| CO-UB-PS-390 | Installation of pumps | 2027-06-24 → 2027-06-19 (-5d) | 2027-06-30 → 2027-06-24 (-6d) |  | none → -107d |
| 3 | **Sewage Lift Station** |  | 2027-02-04 → 2027-01-14 (-21d) |  |  |
| 1 | **Civil work** |  | 2027-02-01 → 2027-01-11 (-21d) |  |  |
| 2 | **Super structure** |  | 2027-02-01 → 2027-01-11 (-21d) |  |  |
| CO-UB-LS-360 | pouring for pump roof |  | 2027-01-18 → 2026-12-28 (-21d) |  | none → 42d |
| CO-UB-LS-370 | curing and deshuttering formwork for pump roof | 2027-01-19 → 2026-12-29 (-21d) | 2027-02-01 → 2027-01-11 (-21d) |  | none → 42d |
| 2 | **Architectural work** | 2027-02-02 → 2027-01-12 (-21d) | 2027-02-04 → 2027-01-14 (-21d) |  |  |
| CO-UB-LS-390 | Executing Plastering and Finishes Works for Sewage Lift Station | 2027-02-02 → 2027-01-12 (-21d) | 2027-02-04 → 2027-01-14 (-21d) |  | none → 42d |
| 5 | **Potable Water Tank** | 2027-01-09 → 2026-12-19 (-21d) | 2027-04-11 → 2027-03-21 (-21d) |  |  |
| 1 | **Eearth Work** | 2027-01-09 → 2026-12-19 (-21d) | 2027-02-02 → 2027-01-12 (-21d) |  |  |
| CO-UB-PWT-100 | Excavation work for tank foundation tank formation level for Potable Water Tank | 2027-01-09 → 2026-12-19 (-21d) | 2027-01-21 → 2026-12-31 (-21d) |  | none → -27d |
| CO-UB-PWT-110 | Soil replacement Up to tank formation level for Potable Water Tank | 2027-01-23 → 2027-01-02 (-21d) | 2027-02-02 → 2027-01-12 (-21d) |  | none → -27d |
| 2 | **Structural Work** | 2027-02-03 → 2027-01-13 (-21d) | 2027-03-25 → 2027-03-01 (-24d) |  |  |
| CO-UB-PWT-120 | Plain Concrete works for Potable Water Tank | 2027-02-03 → 2027-01-13 (-21d) | 2027-02-10 → 2027-01-20 (-21d) |  | none → -27d |
| CO-UB-PWT-130 | Form work for Tank Foundation for Potable Water Tank | 2027-02-11 → 2027-01-21 (-21d) | 2027-02-24 → 2027-02-03 (-21d) |  | none → -27d |
| CO-UB-PWT-140 | Steel Reinforcement work for Tank Foundation for Potable Water Tank | 2027-02-25 → 2027-02-04 (-21d) | 2027-03-14 → 2027-02-17 (-25d) |  | none → -27d |
| CO-UB-PWT-150 | Casting concrete for Tank Foundation for Potable Water Tank | 2027-03-15 → 2027-02-18 (-25d) | 2027-03-25 → 2027-03-01 (-24d) |  | none → -27d |
| 3 | **Tank Shell Erection&Roof Installation** | 2027-03-27 → 2027-03-02 (-25d) | 2027-04-11 → 2027-03-21 (-21d) |  |  |
| CO-UB-PWT-170 | shell erection for Potable Water Tank | 2027-03-27 → 2027-03-02 (-25d) | 2027-04-11 → 2027-03-21 (-21d) |  | none → -27d |
| 2 | **IrrigationTank** | 2027-01-23 → 2027-01-02 (-21d) | 2027-04-10 → 2027-03-20 (-21d) |  |  |
| 1 | **Eearth Work** | 2027-01-23 → 2027-01-02 (-21d) | 2027-02-16 → 2027-01-26 (-21d) |  |  |
| CO-UB-IRT-140 | Excavation work for tank foundation tank formation level for Irrigation Tank | 2027-01-23 → 2027-01-02 (-21d) | 2027-02-04 → 2027-01-14 (-21d) |  | none → -26d |
| CO-UB-IRT-150 | Soil replacement Up to tank formation level for Irrigation Tank | 2027-02-06 → 2027-01-16 (-21d) | 2027-02-16 → 2027-01-26 (-21d) |  | none → -26d |
| 2 | **Structural Work** | 2027-02-17 → 2027-01-27 (-21d) | 2027-03-24 → 2027-02-28 (-24d) |  |  |
| CO-UB-IRT-160 | Plain Concrete works for Irrigation Tank | 2027-02-17 → 2027-01-27 (-21d) | 2027-02-20 → 2027-01-30 (-21d) |  | none → -26d |
| CO-UB-IRT-170 | Form work for Tank Foundation for Irrigation Tank | 2027-02-21 → 2027-01-31 (-21d) | 2027-03-03 → 2027-02-10 (-21d) |  | none → -26d |
| CO-UB-IRT-180 | Steel Reinforcement work for Tank Foundation for Irrigation Tank | 2027-03-04 → 2027-02-11 (-21d) | 2027-03-20 → 2027-02-23 (-25d) |  | none → -26d |
| CO-UB-IRT-190 | Casting concrete for Tank Foundation for Irrigation Tank | 2027-03-21 → 2027-02-24 (-25d) | 2027-03-24 → 2027-02-28 (-24d) |  | none → -26d |
| 3 | **Tank Shell Erection&Roof Installation** | 2027-03-25 → 2027-03-01 (-24d) | 2027-04-10 → 2027-03-20 (-21d) |  |  |
| CO-UB-IRT-210 | shell erection for Irrigation Tank | 2027-03-25 → 2027-03-01 (-24d) | 2027-04-10 → 2027-03-20 (-21d) |  | none → -26d |
| 1 | **Control Room** |  | 2027-05-26 → 2027-04-29 (-27d) |  |  |
| 5 | **Civil Work** |  | 2027-01-13 → 2027-01-04 (-9d) |  |  |
| CO-UB-CR-140 | Pouring Beams and Slab For Control Room |  | 2027-01-13 → 2027-01-04 (-9d) |  | none → -52d |
| 6 | **Finishing Work** | 2027-01-27 → 2027-01-06 (-21d) | 2027-05-26 → 2027-04-29 (-27d) |  |  |
| 1 | **Architictural work** | 2027-01-27 → 2027-01-06 (-21d) | 2027-03-20 → 2027-02-23 (-25d) |  |  |
| CO-UB-CR-150 | Brick Work For Control Room | 2027-01-27 → 2027-01-06 (-21d) | 2027-02-07 → 2027-01-17 (-21d) |  | none → -53d |
| CO-UB-CR-160 | Thermal & Moisture Protection Work for Control Room | 2027-02-08 → 2027-01-18 (-21d) | 2027-02-15 → 2027-01-25 (-21d) |  | none → -53d |
| CO-UB-CR-200 | Install For Curtian Wall and Windows and Doors | 2027-02-16 → 2027-01-26 (-21d) | 2027-02-23 → 2027-02-02 (-21d) |  | none → -53d |
| CO-UB-CR-240 | External Finshing Work (Walls and Floor) | 2027-02-24 → 2027-02-03 (-21d) | 2027-03-04 → 2027-02-11 (-21d) |  | none → -53d |
| CO-UB-CR-250 | Internal Finshing Work (Walls,Floor and Ceiling) | 2027-03-06 → 2027-02-13 (-21d) | 2027-03-20 → 2027-02-23 (-25d) |  | none → -53d |
| 3 | **Mechanical Work** | 2027-02-08 → 2027-01-18 (-21d) | 2027-05-05 → 2027-04-14 (-21d) |  |  |
| 3 | **HVAC System** | 2027-02-08 → 2027-01-18 (-21d) | 2027-05-05 → 2027-04-14 (-21d) |  |  |
| CO-UB-CR-170 | Install of Refrigerant Piping ( fabricated metal ducts with flanges complete with supports, vanes, dampers ) | 2027-02-08 → 2027-01-18 (-21d) | 2027-03-03 → 2027-02-10 (-21d) |  | none → -52d |
| CO-UB-CR-260 | Install of Mini split actual and Ducted split | 2027-03-21 → 2027-02-24 (-25d) | 2027-04-12 → 2027-03-22 (-21d) |  | none → -46d |
| CO-UB-CR-310 | Install of Air Grills 150mm x150mm and Air Diffuser 600mm x 600mm | 2027-04-13 → 2027-03-23 (-21d) | 2027-05-05 → 2027-04-14 (-21d) |  | none → -46d |
| 4 | **Fire Fitting System** | 2027-03-04 → 2027-02-11 (-21d) | 2027-03-27 → 2027-03-02 (-25d) |  |  |
| CO-UB-CR-180 | Installation & Testing of 2 hours Fire rated system for closing the openings between rooms with help of Rock wool | 2027-03-04 → 2027-02-11 (-21d) | 2027-03-18 → 2027-02-22 (-24d) |  | none → -52d |
| CO-UB-CR-270 | Install Fire Extinguishers | 2027-03-21 → 2027-02-24 (-25d) | 2027-03-27 → 2027-03-02 (-25d) |  | none → -47d |
| 1 | **Plumbing System** | 2027-03-21 → 2027-02-24 (-25d) | 2027-04-03 → 2027-03-13 (-21d) |  |  |
| CO-UB-CR-370 | Install of Sanitary Wares Including Relevant Pipes and Fittings | 2027-03-21 → 2027-02-24 (-25d) | 2027-04-03 → 2027-03-13 (-21d) |  | none → -53d |
| 4 | **Electrical Work** | 2027-03-21 → 2027-02-24 (-25d) | 2027-05-13 → 2027-04-22 (-21d) |  |  |
| 1 | **LV Power** | 2027-03-21 → 2027-02-24 (-25d) | 2027-05-09 → 2027-04-18 (-21d) |  |  |
| CO-UB-CR-190 | Install of Distribution board For Control Room | 2027-03-21 → 2027-02-24 (-25d) | 2027-03-31 → 2027-03-07 (-24d) |  | none → -49d |

| ID | Task | Start | Finish | Complete | Total float | Other |
| --- | --- | --- | --- | --- | --- | --- |
| CO-UB-CR-220 | Install of Earting Cable for Control Room | 2027-04-01 → 2027-03-08 (-24d) | 2027-04-17 → 2027-03-27 (-21d) |  | none → -49d |  |
| CO-UB-CR-280 | Install of Socket outlet and LED Lighting | 2027-04-18 → 2027-03-28 (-21d) | 2027-05-09 → 2027-04-18 (-21d) |  | none → -49d |  |
| 3 | **Fire Detection And Alarm System** | 2027-04-04 → 2027-03-14 (-21d) | 2027-05-13 → 2027-04-22 (-21d) |  |  |  |
| CO-UB-CR-210 | Install of 2C x 1.5 Sqm FR Rated Armored - Cable For Loop Wiring | 2027-04-04 → 2027-03-14 (-21d) | 2027-04-07 → 2027-03-17 (-21d) |  | none → -53d |  |
| CO-UB-CR-230 | Install of Transmission Communication cable - Fiber Optics 12Core | 2027-04-08 → 2027-03-18 (-21d) | 2027-04-12 → 2027-03-22 (-21d) |  | none → -53d |  |
| CO-UB-CR-290 | Install of power supply system for fire alarm control panel | 2027-04-13 → 2027-03-23 (-21d) | 2027-04-17 → 2027-03-27 (-21d) |  | none → -53d |  |
| CO-UB-CR-300 | Install of Fire Alarm Control panel | 2027-04-18 → 2027-03-28 (-21d) | 2027-04-24 → 2027-04-03 (-21d) |  | none → -53d |  |
| CO-UB-CR-320 | Installation of the addressable manual call point with operation safety glass breaking | 2027-04-25 → 2027-04-04 (-21d) | 2027-04-27 → 2027-04-06 (-21d) |  | none → -53d |  |
| CO-UB-CR-330 | Install of the photoelectric heat & smoke detector | 2027-04-28 → 2027-04-07 (-21d) | 2027-05-03 → 2027-04-12 (-21d) |  | none → -53d |  |
| CO-UB-CR-340 | Install of Sounder With Beacon | 2027-05-04 → 2027-04-13 (-21d) | 2027-05-09 → 2027-04-18 (-21d) |  | none → -53d |  |
| CO-UB-CR-350 | Install of Addressable Control module | 2027-05-10 → 2027-04-19 (-21d) | 2027-05-13 → 2027-04-22 (-21d) |  | none → -53d |  |
| 2 | **Furnitures work** | 2027-05-20 → 2027-04-24 (-26d) | 2027-05-26 → 2027-04-29 (-27d) |  |  |  |
| CO-UB-CR-360 | Office Chairs,Tables and Stand | 2027-05-20 → 2027-04-24 (-26d) | 2027-05-26 → 2027-04-29 (-27d) |  | none → -53d |  |
| ML | **Softscape and Planting Works** | 2027-05-08 → 2027-04-29 (-9d) | 2027-06-22 → 2027-06-14 (-8d) |  |  |  |
| CO-LS-PL-160 | Planting Works: Planting including plants, forming planting beds, suitable soil, supports, and protection | 2027-05-08 → 2027-04-29 (-9d) | 2027-05-30 → 2027-05-22 (-8d) |  | none → -95d |  |
| CO-LS-SF-170 | Site Furnishings (Seating Bench,Stone Boulders and Gravel) | 2027-05-31 → 2027-05-23 (-8d) | 2027-06-22 → 2027-06-14 (-8d) |  | none → -95d |  |
| 6 | **Storm Drainage Ponds** |  | 2027-05-12 → 2027-05-25 (+13d) |  |  |  |
| CO-SD-PO-100-P1 | Excavation & Filling Works - PART 1 for Storm Drainage Ponds |  | 2027-03-24 → 2027-03-31 (+7d) |  | none → -116d |  |
| CO-SD-PO-110-P1 | Finished Grouted Riprap - PART 1 for Storm Drainage Ponds |  | 2027-04-03 → 2027-04-10 (+7d) |  | none → -116d |  |
| CO-SD-PO-100-P2 | Excavation & Filling Works - PART 2 for Storm Drainage Ponds | 2027-04-04 → 2027-04-11 (+7d) | 2027-04-22 → 2027-04-29 (+7d) |  | none → -111d |  |
| CO-SD-PO-110-P2 | Finished Grouted Riprap - PART 2 for Storm Drainage Ponds | 2027-04-24 → 2027-05-01 (+7d) | 2027-05-12 → 2027-05-25 (+13d) |  | none → -111d |  |
| 1 | **Gaurd Room Work** | 2027-04-25 → 2026-11-02 (-174d) |  |  |  |  |
| 1 | **Civil Work** | 2027-04-25 → 2026-11-02 (-174d) |  |  |  |  |
| A1000 | Excavation Work For Guard Room Foundation | 2027-04-25 → 2026-11-02 A (-174d) |  | 0% → 66% | none → -108d |  |
| A1010 | Pouring for Plain Concrete for Guard Room | 2027-05-01 A |  | 0% → 30% | none → -108d |  |
| 3 | **Boundary Fence** |  | 2027-06-09 → 2027-06-03 (-6d) |  |  |  |
| 2 | **Boundary Fence - South** |  | 2027-04-19 → 2027-04-05 (-14d) |  |  |  |
| 1 | **Civil Work** |  | 2027-01-16 → 2027-01-02 (-14d) |  |  |  |
| CO-SU-FE-N-CI-130 | Pouring R.C Columns For Boundary Fence South |  | 2027-01-03 → 2026-12-20 (-14d) |  | none → -54d |  |
| CO-SU-FE-N-CI-140 | Pouring Beams For Boundary Fence South | 2027-01-03 → 2026-12-20 (-14d) | 2027-01-16 → 2027-01-02 (-14d) |  | none → -54d |  |
| 5 | **Finishing Work** |  | 2027-04-19 → 2027-04-05 (-14d) |  |  |  |
| 4 | **Architictural work** |  | 2027-03-25 → 2027-03-08 (-17d) |  |  |  |
| CO-SU-FE-N-AR-100 | Install Brick Work For Boundary Fence South |  | 2027-02-07 → 2027-01-24 (-14d) | 20% → 75% | none → -54d |  |
| CO-SU-FE-N-AR-110 | Insulation For Boundary Fence South | 2027-02-23 → 2027-02-09 (-14d) | 2027-03-15 → 2027-02-25 (-18d) |  | none → -54d |  |
| CO-SU-FE-N-AR-120 | Install all the Relevant Cladding and Finishes For Boundary Fence South | 2027-03-16 → 2027-02-27 (-17d) | 2027-03-25 → 2027-03-08 (-17d) |  | none → -51d |  |
| 3 | **Electrical Work** | 2027-02-08 → 2027-01-25 (-14d) | 2027-04-19 → 2027-04-05 (-14d) |  |  |  |
| CO-SU-FE-N-EL-240 | Installation of Conduits and Cables for Electricial Works For Boundary Fence South | 2027-02-08 → 2027-01-25 (-14d) | 2027-02-22 → 2027-02-08 (-14d) |  | none → -54d |  |
| CO-SU-FE-N-EL-250 | Install, fixings, testing of all electrical finishes and lightings for Electricial Works For Boundary Fence South | 2027-03-27 → 2027-03-13 (-14d) | 2027-04-19 → 2027-04-05 (-14d) |  | none → -51d |  |
| 1 | **Boundary Fence - West** |  | 2027-04-29 → 2027-04-15 (-14d) |  |  |  |
| 5 | **Finishing Work** |  | 2027-04-29 → 2027-04-15 (-14d) |  |  |  |
| 4 | **Architictural work** |  | 2027-04-12 → 2027-03-29 (-14d) |  |  |  |
| CO-SU-FE-N-AR-130 | Install Brick Work For Boundary Fence West |  | 2027-02-18 → 2026-11-08 A (-102d) | 95% → 100% |  |  |
| CO-SU-FE-N-AR-140 | Insulation For Boundary Fence West |  | 2027-03-29 → 2027-03-15 (-14d) |  | none → -54d |  |
| CO-SU-FE-N-AR-150 | Install all the Relevant Cladding and Finishes For Boundary Fence West | 2027-03-30 → 2027-03-16 (-14d) | 2027-04-12 → 2027-03-29 (-14d) |  | none → -54d | resources Skilled Labor [96 h]; Unskilled Labor [96 h]; Supply and install 33mm thick Lexan cladding blue complete with necessary framings & accessories all as per manufacturer's & architectural drawing. [283.58]; Supply and install 50mm thick random cut stone cladding complete with 600mm x 50mm thick coping, necessary framings, slotted anchor connection, steel tube framing, aluminum angles all necessary fittings & accessories as per manufacturer's detail & archite [3981.34]; Supply and install External plastering to walls and columns min. 15mm thick with cement mortar of specified grade including galvanized mesh, corner beads, angle beads, CE bonds to rough and smooth plaster complete the work as per drawing & specification. [4477.61]; Supply and install 2 coats of weatherproof paint at walls including one prime coat and two coats and putty to give smooth Surface as a base for paint including fiberglass tape to joints and all other accessories as per manufacturers approved specification [4477.61]; Supply and install MODON Signage with Logo Type 1 [3.73]; Supply and install MODON Signage Type 2 [3.73]; Supply and install "Triangle Style" signage [11.19] → Skilled Labor [76.8 h]; Unskilled Labor [76.8 h]; Supply and install 33mm thick Lexan cladding blue complete with necessary framings & accessories all as per manufacturer's & architectural drawing. [283.58]; Supply and install 50mm thick random cut stone cladding complete with 600mm x 50mm thick coping, necessary framings, slotted anchor connection, steel tube framing, aluminum angles all necessary fittings & accessories as per manufacturer's detail & archite [3981.34]; Supply and install External plastering to walls and columns min. 15mm thick with cement mortar of specified grade including galvanized mesh, corner beads, angle beads, CE bonds to rough and smooth plaster complete the work as per drawing & specification. [4477.61]; Supply and install 2 coats of weatherproof paint at walls including one prime coat and two coats and putty to give smooth Surface as a base for paint including fiberglass tape to joints and all other accessories as per manufacturers approved specification [4477.61]; Supply and install MODON Signage with Logo Type 1 [3.73]; Supply and install MODON Signage Type 2 [3.73]; Supply and install "Triangle Style" signage [11.19] |
| 3 | **Electrical Work** | 2027-02-23 → 2027-02-09 (-14d) | 2027-04-29 → 2027-04-15 (-14d) |  |  |  |
| CO-SU-FE-N-EL-260 | Installation of Conduits and Cables for Electricial Works For Boundary Fence West | 2027-02-23 → 2027-02-09 (-14d) | 2027-03-03 → 2027-02-17 (-14d) |  | none → -47d |  |
| CO-SU-FE-N-EL-270 | Install, fixings, testing of all electrical finishes and lightings for Electricial Works For Boundary Fence West | 2027-04-20 → 2027-04-06 (-14d) | 2027-04-29 → 2027-04-15 (-14d) |  | none → -51d |  |
| 3 | **Boundary Fence - North** |  | 2027-04-26 → 2027-04-12 (-14d) |  |  |  |
| 1 | **Civil Work** |  | 2027-01-30 → 2027-01-16 (-14d) |  |  |  |
| CO-SU-FE-N-CI-240 | Pouring Beams For Boundary Fence North | 2027-01-17 → 2027-01-03 (-14d) | 2027-01-30 → 2027-01-16 (-14d) |  | none → -13d |  |
| 5 | **Finishing Work** |  | 2027-04-26 → 2027-04-12 (-14d) |  |  |  |
| 4 | **Architictural work** |  | 2027-04-19 → 2027-04-05 (-14d) |  |  |  |
| CO-SU-FE-N-AR-160 | Install Brick Work For Boundary Fence North |  | 2027-02-27 → 2026-11-08 A (-111d) | 95% → 100% |  |  |
| CO-SU-FE-N-AR-180 | Install all the Relevant Cladding and Finishes For Boundary Fence North |  | 2027-04-19 → 2027-04-05 (-14d) | 20% → 60% | none → -54d |  |
| CO-SU-FE-N-AR-170 | Insulation For Boundary Fence North | 2027-03-30 → 2027-03-16 (-14d) | 2027-04-11 → 2027-03-28 (-14d) |  | none → -53d | resources Skilled Labor [264 h]; Unskilled Labor [264 h]; Two Layers of Bituminous Coating [12532]; 20x20 Approved Polysulfide Joint Sealant [115.67]; 2 perpendicular layers of cold bitumen coats [22.39]; 2 layer of 4mm HDPE membrane, 2 perpendicular layers cold bitumen coats [22.39]; 1 layer EPOXY Paint 300 micron [22.39]; Membrane fully bonded to prime deck and upstand [22.39]; Geotextile Filter membrane uv resistance [22.39]; 85mm thick thermal insulation [22.39]; 1.5mm thick epdm waterproofing membrane [22.39] → Skilled Labor [132 h]; Unskilled Labor [132 h]; Two Layers of Bituminous Coating [12532]; 20x20 Approved Polysulfide Joint Sealant [115.67]; 2 perpendicular layers of cold bitumen coats [22.39]; 2 layer of 4mm HDPE membrane, 2 perpendicular layers cold bitumen coats [22.39]; 1 layer EPOXY Paint 300 micron [22.39]; Membrane fully bonded to prime deck and upstand [22.39]; Geotextile Filter membrane uv resistance [22.39]; 85mm thick thermal insulation [22.39]; 1.5mm thick epdm waterproofing membrane [22.39] |
| 3 | **Electrical Work** | 2027-03-04 → 2027-02-18 (-14d) | 2027-04-26 → 2027-04-12 (-14d) |  |  |  |
| CO-SU-FE-N-EL-280 | Installation of Conduits and Cables for Electricial Works For Boundary Fence North | 2027-03-04 → 2027-02-18 (-14d) | 2027-03-15 → 2027-02-25 (-18d) |  | none → -41d |  |
| CO-SU-FE-N-EL-290 | Install, fixings, testing of all electrical finishes and lightings for Electricial Works For Boundary Fence North | 2027-04-20 → 2027-04-06 (-14d) | 2027-04-26 → 2027-04-12 (-14d) |  | none → -51d |  |
| 4 | **Boundary Fence - East** |  | 2027-06-09 → 2027-06-03 (-6d) |  |  |  |
| 1 | **Civil Work** |  | 2027-02-10 → 2027-01-27 (-14d) |  |  |  |
| CO-SU-FE-N-CI-280 | Pouring R.C Columns For Boundary Fence East |  | 2027-01-23 → 2027-01-06 (-17d) |  | none → -1d |  |
| CO-SU-FE-N-CI-290 | Pouring Beams For Boundary Fence East | 2027-01-31 → 2027-01-17 (-14d) | 2027-02-10 → 2027-01-27 (-14d) |  | none → -9d |  |
| 5 | **Finishing Work** |  | 2027-06-09 → 2027-06-03 (-6d) |  |  |  |
| 4 | **Architictural work** |  | 2027-06-03 → 2027-05-29 (-5d) |  |  |  |
| CO-SU-FE-N-AR-190 | Install Brick Work For Boundary Fence East |  | 2027-05-06 → 2026-11-08 A (-179d) | 40% → 100% |  |  |
| CO-SU-FE-N-AR-210 | Install all the Relevant Cladding and Finishes For Boundary Fence East | 2027-05-25 → 2027-05-13 (-12d) | 2027-06-03 → 2027-05-29 (-5d) |  | none → -86d |  |
| 3 | **Electrical Work** | 2027-05-08 → 2027-05-02 (-6d) | 2027-06-09 → 2027-06-03 (-6d) |  |  |  |
| CO-SU-FE-N-EL-300 | Installation of Conduits and Cables for Electricial Works For Boundary Fence East | 2027-05-08 → 2027-05-02 (-6d) | 2027-05-24 → 2027-05-12 (-12d) |  | none → -86d |  |
| CO-SU-FE-N-EL-310 | Install, fixings, testing of all electrical finishes and lightings for Electricial Works For Boundary Fence East | 2027-06-05 → 2027-05-30 (-6d) | 2027-06-09 → 2027-06-03 (-6d) |  | none → -86d |  |
| TC | **Testing and Comissioning** | 2027-06-21 → 2027-06-22 (+1d) |  |  |  |  |

| ID | Task | Start | Finish | Total float | Other |
| --- | --- | --- | --- | --- | --- |
| INF | **Infrastructure Networks** | 2027-06-26 → 2027-06-29 (+3d) | 2027-07-14 → 2027-07-19 (+5d) |  |  |
| LV | **Low Voltage Network** | 2027-07-01 → 2027-06-29 (-2d) | 2027-07-14 → 2027-07-12 (-2d) |  |  |
| TC-LV-100 | Testing and Commissioning of Low Voltage Network | 2027-07-01 → 2027-06-29 (-2d) | 2027-07-14 → 2027-07-12 (-2d) | none → -110d | resources Road crossing ducts, 2 ways (2 x 150mm HDPE); Road crossing ducts, 2 ways (2 x 110mm UPVC); Road crossing ducts, 3 ways (3 x 110mm UPVC); 4C-300mm2 CU/XLPE / PVC ARMORED CABLE; 4C-240mm2 CU/XLPE / PVC ARMORED CABLE; 4C-185mm2 CU/XLPE / PVC ARMORED CABLE; 4C-50mm2 CU/XLPE / PVC ARMORED CABLE; 4C-16mm2 CU/XLPE / PVC ARMORED CABLE; 4C-16MM2 CU/XLPE / PVC CABLE; 1Cx150sq.mm2,Cu, PVC wire; 1Cx120sq.mm2,Cu, PVC wire; 1Cx95sq.mm,Cu, PVC wire; 1Cx70sq.mm2,Cu, PVC wire; 1Cx25sq.mm2,Cu, PVC wire; 1Cx16sq.mm2,Cu, PVC wire; 1Cx10sq.mm2,Cu, PVC wire; Supply and installation of KWH meter mounting frame including concrete block for installation of KWH meter according to the standards and specifications of SEC. → Road crossing ducts, 2 ways (2 x 150mm HDPE); Road crossing ducts, 2 ways (2 x 110mm UPVC); Road crossing ducts, 3 ways (3 x 110mm UPVC); 4C-300mm2 CU/XLPE / PVC ARMORED CABLE; 4C-240mm2 CU/XLPE / PVC ARMORED CABLE; 4C-185mm2 CU/XLPE / PVC ARMORED CABLE; 4C-50mm2 CU/XLPE / PVC ARMORED CABLE; 4C-16mm2 CU/XLPE / PVC ARMORED CABLE; 4C-16MM2 CU/XLPE / PVC CABLE; 1Cx150sq.mm2,Cu, PVC wire; 1Cx120sq.mm2,Cu, PVC wire; 1Cx95sq.mm,Cu, PVC wire; 1Cx70sq.mm2,Cu, PVC wire; 1Cx25sq.mm2,Cu, PVC wire; 1Cx16sq.mm2,Cu, PVC wire; 1Cx10sq.mm2,Cu, PVC wire; Supply and installation of KWH meter mounting frame including concrete block for installation of KWH meter according to the standards and specifications of SEC.; physical units [1459.2 h] |
| PW1 | **Irrigation Network** | 2027-07-01 → 2027-06-29 (-2d) | 2027-07-14 → 2027-07-12 (-2d) |  |  |
| T/C-IR | Testing and Commissioning of Irrigation Network | 2027-07-01 → 2027-06-29 (-2d) | 2027-07-14 → 2027-07-12 (-2d) | none → -110d | resources pipe line O.D 32 mm PN 10, in depth 0 to 1.5 m; pipe line O.D 40 mm PN 10, in depth 0 to 1.5 m; pipe line O.D 50 mm PN 10, in depth 0 to 1.5 m; Gate valve 50 mm PN16; Direct Burried Gate valve 40 mm PN16; Pressure–compensating bubblers 110 Lit/Hr; Flushing Bronze gate valve dia 1.5" inside PVC box; Air release valve 1.5" inside PVC box; Extra flexible pressure compensating on surface inline dripline`s, O.D. is 16.1 mm; Electrical Solenoid Valve ( 1.5") inside PVC box; Electrical Solenoid Valve ( 2") inside PVC box; Quick coupling valve 1" inside a round valve box 10" size with a manual gate valve, hose swivel and key with all accessories; Advanced Irrigation controller subject to client approval, can connect with Centarl Control system and cabable to integrate with Smart City systems,BMS or Scada system ,Can record the real flow rate per stations; Decoder cables 12 AWG between valves and controllers, The cables shall be pulled through 32? UPVC conduit and inspection 10" round valve box every 100 meters, as per standard specification and drawings; Preparing the irrigation program for the entire system and providing technical services for monitoring and controlling the central irrigation systems by linking the controller with the Main Program System (by GSM). → pipe line O.D 32 mm PN 10, in depth 0 to 1.5 m; pipe line O.D 40 mm PN 10, in depth 0 to 1.5 m; pipe line O.D 50 mm PN 10, in depth 0 to 1.5 m; Gate valve 50 mm PN16; Direct Burried Gate valve 40 mm PN16; Pressure–compensating bubblers 110 Lit/Hr; Flushing Bronze gate valve dia 1.5" inside PVC box; Air release valve 1.5" inside PVC box; Extra flexible pressure compensating on surface inline dripline`s, O.D. is 16.1 mm; Electrical Solenoid Valve ( 1.5") inside PVC box; Electrical Solenoid Valve ( 2") inside PVC box; Quick coupling valve 1" inside a round valve box 10" size with a manual gate valve, hose swivel and key with all accessories; Advanced Irrigation controller subject to client approval, can connect with Centarl Control system and cabable to integrate with Smart City systems,BMS or Scada system ,Can record the real flow rate per stations; Decoder cables 12 AWG between valves and controllers, The cables shall be pulled through 32? UPVC conduit and inspection 10" round valve box every 100 meters, as per standard specification and drawings; Preparing the irrigation program for the entire system and providing technical services for monitoring and controlling the central irrigation systems by linking the controller with the Main Program System (by GSM).; physical units [1459.2 h] |
| PW11 | **TSE Network** | 2027-07-01 → 2027-06-29 (-2d) | 2027-07-14 → 2027-07-12 (-2d) |  |  |
| T/C-TSE-10 | Testing and Commissioning of TSE Network | 2027-07-01 → 2027-06-29 (-2d) | 2027-07-14 → 2027-07-12 (-2d) | none → -110d | resources Depth Between 0m to 1.50m; Depth Between 1.50m to 2.50m; Depth > 2.50m; Gate valves dia 50 mm; Gate valves dia 100 mm; Gate valves dia 150 mm; Gate valves dia 200 mm; Air valves with dia 50 mm; Washout valve dia 100 mm; Wash out chamber (2500x 2500mm); Air valve chamber (1000x 1000 mm); Flow meter chamber (1500x 3000 mm); Flow meter dia 150 mm; Glass Fused Bolted (GLS) 1500 m3 Tank with associated accessories & manufacturer recommendation for the foundation → Depth Between 0m to 1.50m; Depth Between 1.50m to 2.50m; Depth > 2.50m; Gate valves dia 50 mm; Gate valves dia 100 mm; Gate valves dia 150 mm; Gate valves dia 200 mm; Air valves with dia 50 mm; Washout valve dia 100 mm; Wash out chamber (2500x 2500mm); Air valve chamber (1000x 1000 mm); Flow meter chamber (1500x 3000 mm); Flow meter dia 150 mm; Glass Fused Bolted (GLS) 1500 m3 Tank with associated accessories & manufacturer recommendation for the foundation; physical units [1459.2 h] |
| PW | **Potable Water Network** | 2027-07-01 → 2027-06-29 (-2d) | 2027-07-14 → 2027-07-12 (-2d) |  |  |
| T/C-PW | Testing and Commissioning of Potable Water Network | 2027-07-01 → 2027-06-29 (-2d) | 2027-07-14 → 2027-07-12 (-2d) | none → -110d | resources Depth Between 0m to 1.50m; Depth Between 1.50m to 2.50m; Depth > 2.50m; Gate valves Dia 50 mm; Gate valves Dia 100 mm; Gate valves Dia 150 mm; Gate valves Dia 250 mm; Air valves with Dia 50 mm; Washout valve Dia 100 mm; Wash out chamber (2500x 2500mm); Air valve chamber (1000x 1000 mm); Flow meter chamber (1500x 2500 mm); Flow meter dia 100 mm; 3-outlet fire hydrant (2 x 2.5 inch and 1 x 4.5 inch) in the form of a separate dry vacuum cylinder, complete according to drawings.; Glass Fused Bolted (GLS) 1500 m3 Tank with associated accessories & manufacturer recommendation for the foundation → Depth Between 0m to 1.50m; Depth Between 1.50m to 2.50m; Depth > 2.50m; Gate valves Dia 50 mm; Gate valves Dia 100 mm; Gate valves Dia 150 mm; Gate valves Dia 250 mm; Air valves with Dia 50 mm; Washout valve Dia 100 mm; Wash out chamber (2500x 2500mm); Air valve chamber (1000x 1000 mm); Flow meter chamber (1500x 2500 mm); Flow meter dia 100 mm; 3-outlet fire hydrant (2 x 2.5 inch and 1 x 4.5 inch) in the form of a separate dry vacuum cylinder, complete according to drawings.; Glass Fused Bolted (GLS) 1500 m3 Tank with associated accessories & manufacturer recommendation for the foundation; physical units [1459.2 h] |
| SW | **Sewage Network** | 2027-07-01 → 2027-06-29 (-2d) | 2027-07-14 → 2027-07-12 (-2d) |  |  |
| T/C-SW | Testing and Commissioning of Sewage Network | 2027-07-01 → 2027-06-29 (-2d) | 2027-07-14 → 2027-07-12 (-2d) | none → -110d | resources Depth Between 0m to 1.50m; Depth Between 1.50m to 2.50m; Depth > 2.50m; Depth Between 2.50m to 3.50m; Depth Between 3.50m to 4.50m; Depth Between 4.50m to 5.50m; Depth > 5.50m; HDPE Force Main (PE 100, SDR 11, PN 16 bar) DN 160 mm diameter, in trenches depth: 0- 1.5m; HDPE Force Main (PE 100, SDR 11, PN 16 bar) DN 160 mm diameter, in trenches depth: 1.51- 2.5m; Air valves with dia 50 mm; Gate valves Dia 50 mm; Air valve chamber (1000x 1000 mm); Depth: 0 - 1.5m; Depth: 1.51 - 2.5m; Depth: 2.51 - 3.5m; Depth: 3.51 - 4.5m; Depth: 4.51 - 5.5m → Depth Between 0m to 1.50m; Depth Between 1.50m to 2.50m; Depth > 2.50m; Depth Between 2.50m to 3.50m; Depth Between 3.50m to 4.50m; Depth Between 4.50m to 5.50m; Depth > 5.50m; HDPE Force Main (PE 100, SDR 11, PN 16 bar) DN 160 mm diameter, in trenches depth: 0- 1.5m; HDPE Force Main (PE 100, SDR 11, PN 16 bar) DN 160 mm diameter, in trenches depth: 1.51- 2.5m; Air valves with dia 50 mm; Gate valves Dia 50 mm; Air valve chamber (1000x 1000 mm); Depth: 0 - 1.5m; Depth: 1.51 - 2.5m; Depth: 2.51 - 3.5m; Depth: 3.51 - 4.5m; Depth: 4.51 - 5.5m; physical units [1459.2 h] |
| SD | **Storm Drainage Network** | 2027-07-01 → 2027-06-29 (-2d) | 2027-07-14 → 2027-07-19 (+5d) |  |  |
| T/C-DPO | Testing and Commissioning of Storm Drainage Ponds | 2027-07-01 → 2027-06-29 (-2d) | 2027-07-14 → 2027-07-12 (-2d) | none → -110d | resources Depth > 3.50m → Depth > 3.50m; physical units [1459.2 h] |
| T/C-SD | Testing and Commissioning of Storm Drainage Ponds and Storm Drainage Network | 2027-07-01 → 2027-07-06 (+5d) | 2027-07-14 → 2027-07-19 (+5d) | none → -116d | resources Depth Between 0m to 1.50m; Depth Between 1.50m to 2.50m; Depth Between 2.50m to 3.50m; Depth > 3.50m; Depth Between 3.50m to 4.50m; Depth > 4.50m; MH depth 1.5 - 2.5m; MH depth 2.5 - 3.5m; MH depth 3.5 - 4.5m; MH depth > 4.50m; MH depth 2.5 -3.5m; MH depth > 3.50m; GRP Pipe, 900mm diameter with Depth Between 3.51m to 4.50m; Single Catch Basin 1000mm x 1000mm; Double Catch Basin 1200mm x 2300mm; Finished grouted riprap for Pond 300mm as per drawings → Depth Between 0m to 1.50m; Depth Between 1.50m to 2.50m; Depth Between 2.50m to 3.50m; Depth > 3.50m; Depth Between 3.50m to 4.50m; Depth > 4.50m; MH depth 1.5 - 2.5m; MH depth 2.5 - 3.5m; MH depth 3.5 - 4.5m; MH depth > 4.50m; MH depth 2.5 -3.5m; MH depth > 3.50m; GRP Pipe, 900mm diameter with Depth Between 3.51m to 4.50m; Single Catch Basin 1000mm x 1000mm; Double Catch Basin 1200mm x 2300mm; Finished grouted riprap for Pond 300mm as per drawings; physical units [1459.2 h] |
| SL | **Street Lighting Network** | 2027-06-26 → 2027-06-29 (+3d) | 2027-07-08 → 2027-07-12 (+4d) |  |  |
| T/C-SL | Testing and Commissioning of Street Lighting Network | 2027-06-26 → 2027-06-29 (+3d) | 2027-07-08 → 2027-07-12 (+4d) | none → -110d | resources Street Lighting panels LCP (01); Lighting poles with 1 arm, height of (12) meters, including the power distribution box, cables, and RCC foundation.; Lighting poles with 2 arms, height of (12) meters, including the power distribution box, cables, and RCC foundation.; Street Lighting( LED) Luminaire of Output ? 20,965 lumen complete with control gear and lamp, (129.1) WATT.; Including earthing of lighting poles, masts, feeder pillars, unit substations and LV feeders.; Columns → Street Lighting panels LCP (01); Lighting poles with 1 arm, height of (12) meters, including the power distribution box, cables, and RCC foundation.; Lighting poles with 2 arms, height of (12) meters, including the power distribution box, cables, and RCC foundation.; Street Lighting( LED) Luminaire of Output ? 20,965 lumen complete with control gear and lamp, (129.1) WATT.; Including earthing of lighting poles, masts, feeder pillars, unit substations and LV feeders.; Columns; physical units [1459.2 h] |
| TE | **Telecom and Light Current Network** | 2027-06-26 → 2027-06-29 (+3d) | 2027-07-08 → 2027-07-12 (+4d) |  |  |
| T/C-TE | Testing and Commissioning of Telecom and Light Current Networks | 2027-06-26 → 2027-06-29 (+3d) | 2027-07-08 → 2027-07-12 (+4d) | none → -110d | resources 2-ways ducts, 32mm diameter; 2x3-ways ducts, 50mm diameter; 8-ways ducts, 6 x 160mm & 2 x 100mm; 2 PVC ducts 150x200 mm (60mm diameter); 4 PVC ducts 600x150 mm (60mm diameter); 8 PVC ducts 1000x300 mm (60mm diameter); 6 PVC ducts 600x800 mm (60mm diameter); Manhole Type 2 (1600 x 1600 x 2000); Manhole Type 3 (1200 x 1200 x 2000); Manhole Type 1 (800 x 600 x 1200); NVR Server with RAID (5, 6 or 10) to record all cameras storage 80TB with all hardware / software / licenses etc.; VMS Server with RAID (5, 6 or 10) complete Hardware / Software with one Color Laser Printer and all associated accessories for central management.; Licenses for Cameras, Workstations and Keyboards; Work Station (MMI with two monitors each, for Monitoring for CCTV & ACS); Keyboard with joystick for CCTV with all accessories as per specification; Pole mounted IP( PoE) Fixed camera, 5MP,IP 66, IR illumination, 3-8mm varifocal, auto iris lens type; Wall mounted IP( PoE) Fixed camera, 5MP,IP 66, IR illumination, 3-8mm varifocal, auto iris lens type; 5MP Dome camera ceiling Mounted IP (PoE) indoor; 5MP PTZ Multi Sensor Camera IP(PoE) 360 Degree View Outdoor with accessories (IP 66); 8 Port Industrial PoE Switch 10/100BaseT (0 deg to +70 deg. Celsius); Filed Equipment cabinet (FEC), with fan and ventilation, NEMEX 4X ,door, minimum size (600x600x400mm), the cabinet/enclosure includes industrial switch and UPS.; IP Phone Communication server (hot standby) 50 Port equipped, Gateway, Gatekeeper, H.323, SIP, redundant Power etc.; IP Phone Voice gateway; Voice IP Phone; NMS Server for IP phone and NETWORK Elements; NMS Workstation; Firm Ware, software & licenses; Data Cable; Power Cable; Layer 3, 24 Port non-PoE switch10/1000BaseT/LX (-40 deg to +70 deg. Celsius), stack module and associated accessories for utility Telecom Server room; Layer 2, 24 Port non-PoE switch10/1000BaseT (-40 deg to +70 deg. Celsius), stack module and associated accessories for utility Telecom Server and Security Guard house room; Network Management System Server; Network Management System workstation; 42U rack dimension (W x H x L) 800 x 2000 x 1000 mm; 12U rack dimension (W x H x L) 600 x 625 x 600 mm; 06C Optical Fiber SM; 48C Optical Fiber SM; 48 Core Splice Closure; Optical fiber patch cord 5m; Data Cable (STP CAT 6A); 3C Power Cable armored 1.5mm2; 3C Power Cable armored 2.5 mm2; UTP CAT6A Patch Cord 1m/3m/5m; Access Control Unit; Access Card Reader; Magnetic Lock; Break Glass; Exit Push button; Door Sensor; Biometrics Reader; Smart Card Printer; Card Issue Work Station; Photographic Camera with stand; Interface modules with CCTV, Fire and other systems; 1-ways ducts, 6 x 50mm diameter; 6 PVC ducts 150x200 mm (60mm diameter) → 2-ways ducts, 32mm diameter; 2x3-ways ducts, 50mm diameter; 8-ways ducts, 6 x 160mm & 2 x 100mm; 2 PVC ducts 150x200 mm (60mm diameter); 4 PVC ducts 600x150 mm (60mm diameter); 8 PVC ducts 1000x300 mm (60mm diameter); 6 PVC ducts 600x800 mm (60mm diameter); Manhole Type 2 (1600 x 1600 x 2000); Manhole Type 3 (1200 x 1200 x 2000); Manhole Type 1 (800 x 600 x 1200); NVR Server with RAID (5, 6 or 10) to record all cameras storage 80TB with all hardware / software / licenses etc.; VMS Server with RAID (5, 6 or 10) complete Hardware / Software with one Color Laser Printer and all associated accessories for central management.; Licenses for Cameras, Workstations and Keyboards; Work Station (MMI with two monitors each, for Monitoring for CCTV & ACS); Keyboard with joystick for CCTV with all accessories as per specification; Pole mounted IP( PoE) Fixed camera, 5MP,IP 66, IR illumination, 3-8mm varifocal, auto iris lens type; Wall mounted IP( PoE) Fixed camera, 5MP,IP 66, IR illumination, 3-8mm varifocal, auto iris lens type; 5MP Dome camera ceiling Mounted IP (PoE) indoor; 5MP PTZ Multi Sensor Camera IP(PoE) 360 Degree View Outdoor with accessories (IP 66); 8 Port Industrial PoE Switch 10/100BaseT (0 deg to +70 deg. Celsius); Filed Equipment cabinet (FEC), with fan and ventilation, NEMEX 4X ,door, minimum size (600x600x400mm), the cabinet/enclosure includes industrial switch and UPS.; IP Phone Communication server (hot standby) 50 Port equipped, Gateway, Gatekeeper, H.323, SIP, redundant Power etc.; IP Phone Voice gateway; Voice IP Phone; NMS Server for IP phone and NETWORK Elements; NMS Workstation; Firm Ware, software & licenses; Data Cable; Power Cable; Layer 3, 24 Port non-PoE switch10/1000BaseT/LX (-40 deg to +70 deg. Celsius), stack module and associated accessories for utility Telecom Server room; Layer 2, 24 Port non-PoE switch10/1000BaseT (-40 deg to +70 deg. Celsius), stack module and associated accessories for utility Telecom Server and Security Guard house room; Network Management System Server; Network Management System workstation; 42U rack dimension (W x H x L) 800 x 2000 x 1000 mm; 12U rack dimension (W x H x L) 600 x 625 x 600 mm; 06C Optical Fiber SM; 48C Optical Fiber SM; 48 Core Splice Closure; Optical fiber patch cord 5m; Data Cable (STP CAT 6A); 3C Power Cable armored 1.5mm2; 3C Power Cable armored 2.5 mm2; UTP CAT6A Patch Cord 1m/3m/5m; Access Control Unit; Access Card Reader; Magnetic Lock; Break Glass; Exit Push button; Door Sensor; Biometrics Reader; Smart Card Printer; Card Issue Work Station; Photographic Camera with stand; Interface modules with CCTV, Fire and other systems; 1-ways ducts, 6 x 50mm diameter; 6 PVC ducts 150x200 mm (60mm diameter); physical units [1459.2 h] |
| MV | **Medium Voltage Network** | 2027-06-26 → 2027-06-29 (+3d) | 2027-07-08 → 2027-07-12 (+4d) |  |  |
| T/C-MV | Testing and Commissioning of Medium Voltage Network | 2027-06-26 → 2027-06-29 (+3d) | 2027-07-08 → 2027-07-12 (+4d) | none → -110d | resources Excavation for Trench size 40cm wide and 80cm deep (for 1 cable); Excavation for Trench Size 60cm wide and 80cm deep (for 2 cables); Excavation for Trench Size 90cm wide and 80cm deep (for 3 cables); Excavation for Trench Size 180cm wide and 80cm deep (for 6 cables); Excavation for Trench Size 210 cm wide and 80cm deep (for 7 cables); Excavation for Trench Size 240cm wide and 80cm deep (for 8 cables); Duct bank for (33) cables; Duct bank for (21) cables; Duct bank for (15) cables; HV Cable Road Crossing → Excavation for Trench size 40cm wide and 80cm deep (for 1 cable); Excavation for Trench Size 60cm wide and 80cm deep (for 2 cables); Excavation for Trench Size 90cm wide and 80cm deep (for 3 cables); Excavation for Trench Size 180cm wide and 80cm deep (for 6 cables); Excavation for Trench Size 210 cm wide and 80cm deep (for 7 cables); Excavation for Trench Size 240cm wide and 80cm deep (for 8 cables); Duct bank for (33) cables; Duct bank for (21) cables; Duct bank for (15) cables; HV Cable Road Crossing; physical units [1459.2 h] |
| RD | **Road Works** | 2027-06-26 → 2027-06-29 (+3d) | 2027-07-08 → 2027-07-12 (+4d) |  |  |
| T/C-RD | Testing and Commissioning of Road Works | 2027-06-26 → 2027-06-29 (+3d) | 2027-07-08 → 2027-07-12 (+4d) | none → -111d | resources Excavations (including Roads , Plots and Pond); Embankments to the Site and Roads (including Roads , Plots and Pond); Subgrade; Aggregate base course; Bituminous base course (Grading I - Class A), including Prime Coat (MC1); Bituminous concrete wearing course, (Grading I - Class A), including tack coat (RC2); Precast Concrete Curbstone 150X300X900 Type (K1-A); Precast Concrete Curbstone 100X200X500 Type (K4); Precast Concrete Curbstone 150X300X500 Type (K1-B); Precast Concrete Curbstone Type (K1-C); Flush Kerb Type (D); 60mm thick; 80mm thick; Retroreflective Thermoplastic White Traffic lines; Retroreflective Thermoplastic Yellow, Traffic lines; Traffic signs, ground mounted, Sheet Aluminum, (breakaway) Single post IPE, with all accessories; Precast Concrete Blister Warning Tactile Paver Brown Finish 300*300*60mm → Excavations (including Roads , Plots and Pond); Embankments to the Site and Roads (including Roads , Plots and Pond); Subgrade; Aggregate base course; Bituminous base course (Grading I - Class A), including Prime Coat (MC1); Bituminous concrete wearing course, (Grading I - Class A), including tack coat (RC2); Precast Concrete Curbstone 150X300X900 Type (K1-A); Precast Concrete Curbstone 100X200X500 Type (K4); Precast Concrete Curbstone 150X300X500 Type (K1-B); Precast Concrete Curbstone Type (K1-C); Flush Kerb Type (D); 60mm thick; 80mm thick; Retroreflective Thermoplastic White Traffic lines; Retroreflective Thermoplastic Yellow, Traffic lines; Traffic signs, ground mounted, Sheet Aluminum, (breakaway) Single post IPE, with all accessories; Precast Concrete Blister Warning Tactile Paver Brown Finish 300*300*60mm; physical units [1459.2 h] |
| 1 | **Utility Buildings** | 2027-06-21 → 2027-06-22 (+1d) |  |  |  |
| T/C-CTV | Testing and Commissioning of Guard Room and Boundary Fence | 2027-06-21 → 2027-06-22 (+1d) | 2027-07-08 → 2027-07-10 (+2d) | none → -109d | resources 100 mm thickness lean concrete under the foundation; Foundation; Slab on Grade; Walls; Beams; Columns; Slabs; Lightweight Concrete Roof insulation as per Architect's specification; Common brickwork. 300mm thick; vertical straight wall complete with accessories.; Insulated brickwork. with expanded polystyrene 200mm thick; vertical straight wall complete with accessories .; Common brickwork. 150mm thick; vertical straight wall complete with accessories.; Two Layers of Bituminous Coating; 20x20 Approved Polysulfide Joint Sealant; 2 perpendicular layers of cold bitumen coats; 2 layer of 4mm HDPE membrane, 2 perpendicular layers cold bitumen coats; 1 layer EPOXY Paint 300 micron; Membrane fully bonded to prime deck and upstand; Geotextile Filter membrane uv resistance; 85mm thick thermal insulation; 1.5mm thick epdm waterproofing membrane; CW01 - 1000 mm width x 2000 mm height; CW02 - 2000 mm width x 2000 mm height; D2 - 900 mm x 2200 mm height temper door; Supply and install 33mm thick Lexan cladding blue complete with necessary framings & accessories all as per manufacturer's & architectural drawing.; Supply and install 50mm thick random cut stone cladding complete with 600mm x 50mm thick coping, necessary framings, slotted anchor connection, steel tube framing, aluminum angles all necessary fittings & accessories as per manufacturer's detail & archite; Supply and install External plastering to walls and columns min. 15mm thick with cement mortar of specified grade including galvanized mesh, corner beads, angle beads, CE bonds to rough and smooth plaster complete the work as per drawing & specification.; Supply and install 2 coats of weatherproof paint at walls including one prime coat and two coats and putty to give smooth Surface as a base for paint including fiberglass tape to joints and all other accessories as per manufacturers approved specification; Supply and install 300*300mm terrazzo tiles with 150mm high skirting at perimeter with approved quality on 30 mm mortar including sand fill material as approved by the Client (For Roof); Supply and install 300*300mm glazed ceramic wall tiles on cement mortar and including rough and smooth plaster, galvanized mesh, corner beads, angle beads, CE bonds (For Toilets); Supply and install internal plastering and 2 coats of acrylic paint at walls including one coat of primer & two coats of putty to give smooth finish; Supply and install 600*600mm porcelain tiles with approved quality on 30 mm mortar including sand fill material as approved by the Client (for Security Area); Supply and install 12.5mm thk, gypsum board suspended ceiling including suspension system, paints as required specification and material as approved by the Client including frames supports, access openings and all other accessories to complete as shown in; Guard room coping 350mm; Guard room coping 450mm; Stone coping 500mm; Stone coping 525mm; Supply and install MODON Signage with Logo Type 1; Supply and install MODON Signage Type 2; Supply and install "Triangle Style" signage; Office Chairs; Office Tables; Guard Stand; Magnetic Control Access barrier, Automatic Vehicular Barriers to be installed on ground with magnetic access; Supply and install Hand Wash Basin with Water Tap, angle valve, P-trap connected to 50mm diameter sanitary pipe fittings chased to wall.; Supply and install paper towel dispenser, surface mounted, satin finish stainless steel as per approved sample including accessories.; Supply and install mirror, size 460*910mm as per approved sample including frames, backing and all accessories to complete.; Supply and install towel ring , surface mounted, satin finish stainless steel as per approved sample including accessories.; Kitchen sink with single bowl with hot/cold water mixer.; Supply and install Base mounted flush tank water Western water closet system with lid connected to 110mm soil pipe and sanitary tee complete with jointing, angles and bent below floor slab to drainage system; Gate Valves; Slow Closing Valve; 1 meter length 10mm diameter Flexible Hose with insulated handle complete with fork support, index push, vacuum breaker; 50mm diameter; 75mm diameter; 80mm diameter; 100mm diameter; 110mm diameter; 13mm diameter; 15mm diameter; 20mm diameter; 25mm diameter; 32mm diameter; Isolation Valve Size 20; Isolation Valve Size 25; Isolation Valve Size 32; Isolation Valve Size 50; 20 mm diameter spray head for cold water supply; Supply and install Electric Water Heater set with connection; Water meter complete with accessories.; Roof drain; Vent on a roof to exhaust air; 300 X 300 mm Gully trap; inspection chamber, size 800x900x1000; 900mm x 800mm Pressure break chamber; Floor cleanout, size 75 mm diameter; Floor cleanout, size 110 mm diameter; GRP water tanks capacity of each 1000 liter complete with all fittings, all valves and concrete pad; Mini split actual capacity 2 Ton; Supply, fabricate, install and testing factory fabricated metal ducts with flanges complete with supports, vanes, dampers, links, levers and quadrants etc. as per specifications. It shall include all materials of the duct and supporting arrangement comple; Supplying, installation testing & commissioning of external insulation on ducts; Supply, fix, testing and commissioning of exhaust air/fresh air louvers of powder coated extruded aluminium construction.; Providing, fixing, testing and commissioning of powder coated extruded aluminum sections grills and diffusers with dampers.; Supply, Installation & Testing of 2 hours Fire rated system for closing the openings between rooms with help of Rock wool, G.I Sheet and Hilti or equivalent Sealants( Qty measured will be the size of opening). Item Properties shall be quoted as per techni; 4.5 KG CO2 Type Fire Extinguishers; 6 KG ABC Type Fire Extinguishers; Junction Box for lighting fixture; Trench excavation to receive 2 nos 50mm diameter PVC Conduit, sand bedding and embedded with sand encasement and backfilling with excavated material complete with warning tape at approved depth; Supply, Install, fixings, testing and commissioning 80W LED Projector waterproof DJ effect light including customized project image features complete with mounting system specification to Engineer's approval.; Earth Pit; Grounding rod 20mmX3m; Grounding rod with Pit 20mmX3m; Earthing Bar; 120mm2 Tinned copper wire; Guard Room 1; Guard Room 2; Guard Room 3; 30A, 2P AC Disconnect Switch; 20A Duplex Receptacle Floor Mounted; Twin Socket outlet; Twin Socket outlet, Weather Proof; Single gang Lighting switch; 36W LED linear Pendant lighting; 36W LED Emergency linear Pendant lighting; 13W recess mounted LED down light fitting; 13W recess emergency mounted LED down light fitting with 1.5 Hr Battery; 10.4W LED Exit light with 1.5 Hr Battery; 4mm2 Cu./FRLSZH Cable; 6mm2 Cu./FRLSZH Cable; IR Intrusion Detection System Quad Beams (Tx & Rx) (SL-350 QDM); Control cable; CAT6A cable; Field Equipment Cabinet enclosed outdoor complete with precast concrete footing, suitable for parameter security and weather proof to the local enviroment. Not less than IP66 and IK rating.; Supply and install 800mm x 800mm x 800mm height concrete handhole with bituminous paint all around, 690mm x 690mm handhold cover and sump cover.; including pit excavation; 800mm depth minimum Trench excavation to receive 3 nos 50mm diameter PVC Conduit with spacer, sand bedding and embedded with sand encasement and backfill with excavated material well compacted complete with warning tape; Hot dipped galvanized cable conduits for CAT6A cable and Control Cables embedded to wall; 8 Port Industrial PoE Switch 10/100BaseT (0 deg to +70 deg. Celsius); 06C Optical Fiber SM; 48C Optical Fiber SM; 48 Core Splice Closure; Boom Barrier at Security Guard Room; Pedestrian turnstile at Security Guard Room; Access Control Unit; Access Card Reader; Magnetic Lock; Break Glass; Exit Push button; Door Sensor; Biometrics Reader; Pole/Bollard mounted IP( PoE), Automatic Number Plate Recognition (ANPR, camera, 5MP,IP 66, IR illumination, 3-8mm varifocal, auto iris lens type price include the Bollard/pole); 12U rack dimension (W x H x L) 600 x 625 x 600 mm; 4C-16mm2 CU/XLPE/PVC direct buried armored cable; 4C-10mm2 CU/XLPE/PVC direct buried armored cable; 16mm2 CU/PVC wire; 10mm2 CU/PVC wire; 400V, 3PH, 60Hz lighting control panel (LCP-02); 38W, 230V, 1PH, 60Hz fence, led linear uplight lighting, IP66; Fire Alarm Control panel with fire alarm zoning with Mimic panel with fire alarm zoning; Main Fire Alarm Control panel with fire alarm zoning with Mimic panel with fire alarm zoning; Supply and installation of the addressable manual call point with operation safety glass breaking and pushbutton; Supply and installation of the photoelectric heat & smoke detector with base; Sounder With Beacon; Addressable Control module for Sounders; Addressable Control module for HVAC System; Addressable Monitor module for HVAC System; 2C x 1.5 Sqm FR Rated Armored - Cable For Loop Wiring; DACT (Auto - Dailer) for 24x7 Civil Defence; Transmission Communication cable - Fiber Optics 12Core; Transmission Communication cable - Ethernet Cable; Supply, install to site and installation of power supply system for fire alarm control panel; Supply, install to site and installation of power cable; Fire Fighter’s Telephone Centre; Fireman’s Telephone Jack; Voice Command Center → 100 mm thickness lean concrete under the foundation; Foundation; Slab on Grade; Walls; Beams; Columns; Slabs; Lightweight Concrete Roof insulation as per Architect's specification; Common brickwork. 300mm thick; vertical straight wall complete with accessories.; Insulated brickwork. with expanded polystyrene 200mm thick; vertical straight wall complete with accessories .; Common brickwork. 150mm thick; vertical straight wall complete with accessories.; Two Layers of Bituminous Coating; 20x20 Approved Polysulfide Joint Sealant; 2 perpendicular layers of cold bitumen coats; 2 layer of 4mm HDPE membrane, 2 perpendicular layers cold bitumen coats; 1 layer EPOXY Paint 300 micron; Membrane fully bonded to prime deck and upstand; Geotextile Filter membrane uv resistance; 85mm thick thermal insulation; 1.5mm thick epdm waterproofing membrane; CW01 - 1000 mm width x 2000 mm height; CW02 - 2000 mm width x 2000 mm height; D2 - 900 mm x 2200 mm height temper door; Supply and install 33mm thick Lexan cladding blue complete with necessary framings & accessories all as per manufacturer's & architectural drawing.; Supply and install 50mm thick random cut stone cladding complete with 600mm x 50mm thick coping, necessary framings, slotted anchor connection, steel tube framing, aluminum angles all necessary fittings & accessories as per manufacturer's detail & archite; Supply and install External plastering to walls and columns min. 15mm thick with cement mortar of specified grade including galvanized mesh, corner beads, angle beads, CE bonds to rough and smooth plaster complete the work as per drawing & specification.; Supply and install 2 coats of weatherproof paint at walls including one prime coat and two coats and putty to give smooth Surface as a base for paint including fiberglass tape to joints and all other accessories as per manufacturers approved specification; Supply and install 300*300mm terrazzo tiles with 150mm high skirting at perimeter with approved quality on 30 mm mortar including sand fill material as approved by the Client (For Roof); Supply and install 300*300mm glazed ceramic wall tiles on cement mortar and including rough and smooth plaster, galvanized mesh, corner beads, angle beads, CE bonds (For Toilets); Supply and install internal plastering and 2 coats of acrylic paint at walls including one coat of primer & two coats of putty to give smooth finish; Supply and install 600*600mm porcelain tiles with approved quality on 30 mm mortar including sand fill material as approved by the Client (for Security Area); Supply and install 12.5mm thk, gypsum board suspended ceiling including suspension system, paints as required specification and material as approved by the Client including frames supports, access openings and all other accessories to complete as shown in; Guard room coping 350mm; Guard room coping 450mm; Stone coping 500mm; Stone coping 525mm; Supply and install MODON Signage with Logo Type 1; Supply and install MODON Signage Type 2; Supply and install "Triangle Style" signage; Office Chairs; Office Tables; Guard Stand; Magnetic Control Access barrier, Automatic Vehicular Barriers to be installed on ground with magnetic access; Supply and install Hand Wash Basin with Water Tap, angle valve, P-trap connected to 50mm diameter sanitary pipe fittings chased to wall.; Supply and install paper towel dispenser, surface mounted, satin finish stainless steel as per approved sample including accessories.; Supply and install mirror, size 460*910mm as per approved sample including frames, backing and all accessories to complete.; Supply and install towel ring , surface mounted, satin finish stainless steel as per approved sample including accessories.; Kitchen sink with single bowl with hot/cold water mixer.; Supply and install Base mounted flush tank water Western water closet system with lid connected to 110mm soil pipe and sanitary tee complete with jointing, angles and bent below floor slab to drainage system; Gate Valves; Slow Closing Valve; 1 meter length 10mm diameter Flexible Hose with insulated handle complete with fork support, index push, vacuum breaker; 50mm diameter; 75mm diameter; 80mm diameter; 100mm diameter; 110mm diameter; 13mm diameter; 15mm diameter; 20mm diameter; 25mm diameter; 32mm diameter; Isolation Valve Size 20; Isolation Valve Size 25; Isolation Valve Size 32; Isolation Valve Size 50; 20 mm diameter spray head for cold water supply; Supply and install Electric Water Heater set with connection; Water meter complete with accessories.; Roof drain; Vent on a roof to exhaust air; 300 X 300 mm Gully trap; inspection chamber, size 800x900x1000; 900mm x 800mm Pressure break chamber; Floor cleanout, size 75 mm diameter; Floor cleanout, size 110 mm diameter; GRP water tanks capacity of each 1000 liter complete with all fittings, all valves and concrete pad; Mini split actual capacity 2 Ton; Supply, fabricate, install and testing factory fabricated metal ducts with flanges complete with supports, vanes, dampers, links, levers and quadrants etc. as per specifications. It shall include all materials of the duct and supporting arrangement comple; Supplying, installation testing & commissioning of external insulation on ducts; Supply, fix, testing and commissioning of exhaust air/fresh air louvers of powder coated extruded aluminium construction.; Providing, fixing, testing and commissioning of powder coated extruded aluminum sections grills and diffusers with dampers.; Supply, Installation & Testing of 2 hours Fire rated system for closing the openings between rooms with help of Rock wool, G.I Sheet and Hilti or equivalent Sealants( Qty measured will be the size of opening). Item Properties shall be quoted as per techni; 4.5 KG CO2 Type Fire Extinguishers; 6 KG ABC Type Fire Extinguishers; Junction Box for lighting fixture; Trench excavation to receive 2 nos 50mm diameter PVC Conduit, sand bedding and embedded with sand encasement and backfilling with excavated material complete with warning tape at approved depth; Supply, Install, fixings, testing and commissioning 80W LED Projector waterproof DJ effect light including customized project image features complete with mounting system specification to Engineer's approval.; Earth Pit; Grounding rod 20mmX3m; Grounding rod with Pit 20mmX3m; Earthing Bar; 120mm2 Tinned copper wire; Guard Room 1; Guard Room 2; Guard Room 3; 30A, 2P AC Disconnect Switch; 20A Duplex Receptacle Floor Mounted; Twin Socket outlet; Twin Socket outlet, Weather Proof; Single gang Lighting switch; 36W LED linear Pendant lighting; 36W LED Emergency linear Pendant lighting; 13W recess mounted LED down light fitting; 13W recess emergency mounted LED down light fitting with 1.5 Hr Battery; 10.4W LED Exit light with 1.5 Hr Battery; 4mm2 Cu./FRLSZH Cable; 6mm2 Cu./FRLSZH Cable; IR Intrusion Detection System Quad Beams (Tx & Rx) (SL-350 QDM); Control cable; CAT6A cable; Field Equipment Cabinet enclosed outdoor complete with precast concrete footing, suitable for parameter security and weather proof to the local enviroment. Not less than IP66 and IK rating.; Supply and install 800mm x 800mm x 800mm height concrete handhole with bituminous paint all around, 690mm x 690mm handhold cover and sump cover.; including pit excavation; 800mm depth minimum Trench excavation to receive 3 nos 50mm diameter PVC Conduit with spacer, sand bedding and embedded with sand encasement and backfill with excavated material well compacted complete with warning tape; Hot dipped galvanized cable conduits for CAT6A cable and Control Cables embedded to wall; 8 Port Industrial PoE Switch 10/100BaseT (0 deg to +70 deg. Celsius); 06C Optical Fiber SM; 48C Optical Fiber SM; 48 Core Splice Closure; Boom Barrier at Security Guard Room; Pedestrian turnstile at Security Guard Room; Access Control Unit; Access Card Reader; Magnetic Lock; Break Glass; Exit Push button; Door Sensor; Biometrics Reader; Pole/Bollard mounted IP( PoE), Automatic Number Plate Recognition (ANPR, camera, 5MP,IP 66, IR illumination, 3-8mm varifocal, auto iris lens type price include the Bollard/pole); 12U rack dimension (W x H x L) 600 x 625 x 600 mm; 4C-16mm2 CU/XLPE/PVC direct buried armored cable; 4C-10mm2 CU/XLPE/PVC direct buried armored cable; 16mm2 CU/PVC wire; 10mm2 CU/PVC wire; 400V, 3PH, 60Hz lighting control panel (LCP-02); 38W, 230V, 1PH, 60Hz fence, led linear uplight lighting, IP66; Fire Alarm Control panel with fire alarm zoning with Mimic panel with fire alarm zoning; Main Fire Alarm Control panel with fire alarm zoning with Mimic panel with fire alarm zoning; Supply and installation of the addressable manual call point with operation safety glass breaking and pushbutton; Supply and installation of the photoelectric heat & smoke detector with base; Sounder With Beacon; Addressable Control module for Sounders; Addressable Control module for HVAC System; Addressable Monitor module for HVAC System; 2C x 1.5 Sqm FR Rated Armored - Cable For Loop Wiring; DACT (Auto - Dailer) for 24x7 Civil Defence; Transmission Communication cable - Fiber Optics 12Core; Transmission Communication cable - Ethernet Cable; Supply, install to site and installation of power supply system for fire alarm control panel; Supply, install to site and installation of power cable; Fire Fighter’s Telephone Centre; Fireman’s Telephone Jack; Voice Command Center; physical units [1945.6 h] |
| T/C-CTV20 | Testing and Commissioning of Softscape And Planting | 2027-06-23 → 2027-06-22 (-1d) | 2027-07-11 → 2027-07-10 (-1d) | none → -101d | resources Neem Tree, T01 Tree; Cassia Glauca Tree, T02 Tree; Ponciana Tree, T03 Tree; Dodonaea Viscosa, S01 Shrubs 400-500mm, 4plant/m2; Vitex Angus-Cactus, S02 Shrubs 400-500mm, 5plant/m2; Pennisetum Rubrum , S03 Shrubs 400-500mm, 5plant/m2; sesuvium portulacastrum green carpet, GC01 Ground Cover; Catharanthus Roseus 150-200mm, GC02 Ground Cover; Seating Bench; Riyadh Stone Boulders 450mm thick; Gravel Mulch 150mm Beige; Gravel Mulch 150mm White; Gravel Ponds Bed - MARL MIX 500-600mm; Trash/ Recycle Bins → Neem Tree, T01 Tree; Cassia Glauca Tree, T02 Tree; Ponciana Tree, T03 Tree; Dodonaea Viscosa, S01 Shrubs 400-500mm, 4plant/m2; Vitex Angus-Cactus, S02 Shrubs 400-500mm, 5plant/m2; Pennisetum Rubrum , S03 Shrubs 400-500mm, 5plant/m2; sesuvium portulacastrum green carpet, GC01 Ground Cover; Catharanthus Roseus 150-200mm, GC02 Ground Cover; Seating Bench; Riyadh Stone Boulders 450mm thick; Gravel Mulch 150mm Beige; Gravel Mulch 150mm White; Gravel Ponds Bed - MARL MIX 500-600mm; Trash/ Recycle Bins; physical units [1945.6 h] |
| T/C-CTV10 | Testing and Commissioning of Utility Buildings |  |  | none → -109d | resources 100 mm thickness lean concrete under the foundation; Foundation; Grade Beams; Slab on grade; Walls; Beams; Slabs; Lightweight Concrete Roof insulation as per Architect's specification; Hollow Concrete masonry unit, 100 mm thick wall for internal block; Hollow Concrete masonry unit, 150 mm thick wall for internal block; Insulated brickwork. with expanded polystyrene 200mm thick for External block; Hollow Concrete masonry unit, 300 mm thick wall for External block; 2 perpendicular layers of cold bitumen coats; 2 layer of 4mm HDPE membrane, 2 perpendicular layers cold bitumen coats; 1 layer EPOXY Paint 300 micron; Membrane fully bonded to prime deck and upstand; Geotextile Filter membrane uv resistance; 85mm thick thermal insulation; 1.5mm thick epdm waterproofing membrane; D1 - 1100 mm width x 2200 mm height; D2 - 1070 mm width x 2225 mm height; D3 - 1200 mm width x 3000 mm height; D4 - 1800 mm width x 3000 mm height; Roller Shuter - 3000mm width x 4000mm height; D1' 1900mm width x 2950mm height; D2' 1200mm width x 2150mm height; D3' 800mm width x 2050mm height; D4' 1700mm width x 2050mm height; 1500 mm width x 1200 mm high (W01); 1200 mm width x 1200 mm high (W02); 1000 mm width x 2400 mm high (L1); Supply and install External plastering to walls and columns min. 15mm thick with cement mortar of specified grade including galvanized mesh, corner beads, angle beads, CE bonds to rough and smooth plaster complete the work as per drawing & specification.; Supply and install 2 coats of weatherproof paint at walls including one prime coat and two coats and putty to give smooth Surface as a base for paint including fiberglass tape to joints and all other accessories as per manufacturers approved specification; Supply and install internal plastering to walls and columns min. 15mm thick with cement mortar of specified grade including galvanized mesh, corner beads, angle beads, CE bonds to rough and smooth plaster complete the work as per drawing & specification.; Supply and install 2 coats of epoxy paint at walls including one prime coat and two coats and putty to give smooth Surface as a base for paint including fiberglass tape to joints and all other accessories as per manufacturers approved specification; Supply and install 300*300mm glazed ceramic wall tiles on cement mortar and including rough and smooth plaster, galvanized mesh, corner beads, angle beads, CE bonds; Acid Proof Tiles; Supply and install 600*600mm porcelain tiles with approved quality on 30 mm mortar including sand fill material as approved by the Client; Supply and install 12.5mm thk, gypsum board suspended ceiling including suspension system, paints as required specification and material as approved by the Client including frames supports, access openings and all other accessories to complete as shown in; 4.5 KG CO2 Type Fire Extinguishers; 6 KG ABC Type Fire Extinguishers; 15 mm dia.; 25 mm dia.; 32 mm dia.; 40 mm dia.; 80 mm dia.; 200 mm dia.; 250 mm dia.; Supply and installation of western water closet, flush tank type, heavy duty, one piece SASO certified, approval of client, dimesion not less than 40 cm width, 68 cm length including all other accessories as per drawings and specification; Supply and installation of urinal, heavy duty, one piece SASO certified, approval of client, including all other accessories as per drawings and specification; Supply and installation of Bib tap with Perenial Hose (BPH) with stainless steel flexible hose and cast brass chromeplated hand including all other accessories to complete as per drawing and specification.; Supply, installation, testing and commissioning of Lavatory / wash basin with counter for toilets, built in soap dispenser, mixer, single lever arm including all accessories as per drawings and specification and to the approval of the client; Provide and install paper towel dispenser, surface mounted, satin finish stainless steel as per approved sample including accessories.; Provide and install mirror as per approved sample including frames, backing and all accessories to complete.; Provide and install towel ring, surface mounted, satin finish stainless steel as per approved sample including accessories.; Hose Bib; Valve Chamber; Retarding Chamber; Inspection Chamber; Neutralization pit 1000x1000mm; 25mm diameter; 32mm diameter; 40mm diameter; 50mm diameter; 75mm diameter; 80mm diameter; 100mm diameter; 110mm diameter; 15mm diameter; 20mm diameter; 150mm diameter; 200mm diameter; 250mm diameter; 13mm diameter; Gully Trap; Floor drain 75mm; Floor cleanout 110mm; Roof drain; 20 mm; 25 mm; 32 mm; 40 mm; 50 mm; 100 mm; 150 mm; 200 mm; 250 mm; Altitude control valve assembly, size 200 mm; GRP water tanks capacity of each 1000 liter complete with all fittings, all valves and concrete pad; Water Heater 30ltr; Supply, install, connection, testing and commssionigs horizontal bladder type pressure tank with capacity 1500 liter according to manufacturer's detail and specification - PS-PT-1; Supply, install, connection, testing and commssionigs horizontal bladder type pressure tank with capacity 300 liter according to manufacturer's detail and specification - PS-PT-2; Chemical DosingTank (CDT) 6000 liters capacity polytheylene tank With pump assembly.; Actual capacity 1.0 Ton; Actual capacity 1.5 Ton; Actual capacity 2.0 Ton; Air Flow 280 l/s @ 150 pa; Air Flow 3200 l/s @ 100 pa; Air Flow 110 l/s @ 50 pa; Air Flow 70 l/s @ 50 pa; Air Flow 35 l/s @ 35 pa; Air Flow 105 l/s @ 50 pa; Air Flow 180 l/s @ 0.01 pa; Supply and install flexible duct with insulation; size 8 inch dia.; Supply and install flexible duct with insulation; size 10 inch dia.; Package Unit 57.4 kW "thermal"; Variable Air Volume (VAV 01); Variable Air Volume (VAV 02); Variable Air Volume (VAV 03); Variable Air Volume (VAV 04); Variable Air Volume (VAV 05); Variable Air Volume (VAV 06); Galvanized sheet metal ducts; Supply Liner Slot diffuser 3 slots 1 inch; Return Liner Slot diffuser 3 slots 1 inch; Exhaust Grill 150mm x 150mm; Exhast Air fan 515 l/s @ 150 pa; Exhast Air fan 3200 l/s @ 100 pa; Sand trap louver 2400mm x 1000mm; Sound attenuator size 1050 x 650 x 1000 m; Fire suppression system FM200 57 kg fill capacity consists of 2 cylinders, duty + standby, complete with all required mechanical, electrical , and control items to install, test, and operate the system.; Fire suppression system NOVEC 1230 134.1 kg fill capacity consists of 2 cylinders, duty + standby, complete with all required mechanical, electrical , and control items to install, test, and operate the system.; Fire suppression system NOVEC 1230 29.2 kg fill capacity consists of 2 cylinders, duty + standby, complete with all required mechanical, electrical , and control items to install, test, and operate the system.; Fire suppression system NOVEC 1230 53.5 kg fill capacity consists of 2 cylinders, duty + standby, complete with all required mechanical, electrical , and control items to install, test, and operate the system.; Fire suppression system NOVEC 1230 82.3 kg fill capacity consists of 2 cylinders, duty + standby, complete with all required mechanical, electrical , and control items to install, test, and operate the system.; Fire suppression system NOVEC 1230 42.5 kg fill capacity consists of 2 cylinders, duty + standby, complete with all required mechanical, electrical , and control items to install, test, and operate the system.; Supply and install steel ladder with cage at pump room for as per drawings and specification.; Overhead Travelling Crane; lifting capacity 1.50 ton manual type all to manufacturer's detail and specifications. - PS-OC-1; Hot dipped Galvanized steel Trench Grating; Hot dipped Galvanized steel Channel Cover Plate; Steel Frame and Cover 1200 x 1200; Vent Cowl (Standard Size); Steel Handrail of 1.2m height; 30W LED linear Pendant lighting; 30W LED Emergency linear Pendant lighting; 47W LED linear Pendant lighting; 47W LED Emergency linear Pendant lighting; 13W recess mounted LED down light fitting; 13W recess emergency mounted LED down light fitting with 1.5 Hr Battery; 10.4W LED Exit light with 1.5 Hr Battery; Distribution board (MDB-PR-01); Distribution board (LPDB-PR-01); Distribution board (MDB-CB-01); Distribution board (LPDB-CR-01); 13A,1? 230V Twin socket outlet with switch; 13A,1? 230V Industrial socket outlet with switch; 13A, Twin Socket outlet, Weather Proof; 400A, 3P Disconnect switch; 30A, 2P AC Disconnect Switch; 30A, 3P AC Disconnect Switch; 60A, 3P AC Disconnect Switch; 20A Duplex Receptacle Floor Mounted; Single gang Lighting switch; Double gang Lighting switch; 2way Single gang Lighting switch; Cable Tray 300 mm X 100 mm; 4CX6 Cu. XLPE FRLSZH Cable; 4CX10 Cu. XLPE FRLSZH Cable; 4CX16 Cu. XLPE FRLSZH Cable; 4CX25 Cu. XLPE FRLSZH Cable; 4CX35 Cu. XLPE FRLSZH Cable; 4CX185 Cu. XLPE FRLSZH Cable; 120mm2 Tinned copper wire; Grounding rod 20mmX3m; Grounding rod with Pit 20mmX3m; Earthing Bar; Cu earth strip 25X4 mm; 1.5m Air terminal; 4mm2 Cu./FRLSZH Cable; 6mm2 Cu./FRLSZH Cable; 10mm2 Cu./FRLSZH Cable; 16mm2 Cu./FRLSZH Cable; 95mm2 Cu./FRLSZH Cable; 120mm2 Cu./FRLSZH Cable; 30KVA, 400V, 3PH, 60Hz UPS; CB-UPS-01 panel; Supply, install and connection of a SCADA server cum workstation complete with network rack, network switch, sensors, printer, armoured cables with cable tray & conduits, level transmitter, liquid flow meter, quality sensor (COD,BOD,pH), pressure transmit; Fire Alarm Control panel with fire alarm zoning with Mimic panel with fire alarm zoning; Supply, install to site and installation of the Aspirating Smoke Detector complete with accessories and pipes; Supply, install to site and installation of the addressable manual call point with operation safety glass breaking and pushbutton; Supply, install to site and installation of the photoelectric smoke detector with base; Supply, install to site and installation of the heat detector with base; Supply, install to site and installation of multi criteria sensors with base; Supply, install to site and installation of Hydrogen detector; Supply, install to site and installation of Duct detector; Sounder With Beacon; Remote LED Indicator; Single Channel Interface Module; Addressable Control module for Sounders; Addressable relay module for interface; Addressable monitor module for interface; Supply, install to site and installation Fire loop cable; Supply, install to site and installation of power cable; Fire Fighter’s Telephone Centre; Fireman’s Telephone Jack; Voice Command Center; DACT (Auto - Dailer) for 24x7 Civil Defence; Transmission Communication cable - Fiber Optics; Transmission Communication cable - Ethernet Cable; Supply, install to site and installation of power supply system for fire alarm control panel; Pump Set for Irrigation Supply (IRR01 / IRR02); Pump Set for Drainage System; Pump Set for SW Force Main (1W+1S); Pump Set for FF Supply (FP01.FP02); Pump Set for Domestic Supply (BP01 / BP02); acoustical tiles suspended ceiling 600x600mm concealed metal → 100 mm thickness lean concrete under the foundation; Foundation; Grade Beams; Slab on grade; Walls; Beams; Slabs; Lightweight Concrete Roof insulation as per Architect's specification; Hollow Concrete masonry unit, 100 mm thick wall for internal block; Hollow Concrete masonry unit, 150 mm thick wall for internal block; Insulated brickwork. with expanded polystyrene 200mm thick for External block; Hollow Concrete masonry unit, 300 mm thick wall for External block; 2 perpendicular layers of cold bitumen coats; 2 layer of 4mm HDPE membrane, 2 perpendicular layers cold bitumen coats; 1 layer EPOXY Paint 300 micron; Membrane fully bonded to prime deck and upstand; Geotextile Filter membrane uv resistance; 85mm thick thermal insulation; 1.5mm thick epdm waterproofing membrane; D1 - 1100 mm width x 2200 mm height; D2 - 1070 mm width x 2225 mm height; D3 - 1200 mm width x 3000 mm height; D4 - 1800 mm width x 3000 mm height; Roller Shuter - 3000mm width x 4000mm height; D1' 1900mm width x 2950mm height; D2' 1200mm width x 2150mm height; D3' 800mm width x 2050mm height; D4' 1700mm width x 2050mm height; 1500 mm width x 1200 mm high (W01); 1200 mm width x 1200 mm high (W02); 1000 mm width x 2400 mm high (L1); Supply and install External plastering to walls and columns min. 15mm thick with cement mortar of specified grade including galvanized mesh, corner beads, angle beads, CE bonds to rough and smooth plaster complete the work as per drawing & specification.; Supply and install 2 coats of weatherproof paint at walls including one prime coat and two coats and putty to give smooth Surface as a base for paint including fiberglass tape to joints and all other accessories as per manufacturers approved specification; Supply and install internal plastering to walls and columns min. 15mm thick with cement mortar of specified grade including galvanized mesh, corner beads, angle beads, CE bonds to rough and smooth plaster complete the work as per drawing & specification.; Supply and install 2 coats of epoxy paint at walls including one prime coat and two coats and putty to give smooth Surface as a base for paint including fiberglass tape to joints and all other accessories as per manufacturers approved specification; Supply and install 300*300mm glazed ceramic wall tiles on cement mortar and including rough and smooth plaster, galvanized mesh, corner beads, angle beads, CE bonds; Acid Proof Tiles; Supply and install 600*600mm porcelain tiles with approved quality on 30 mm mortar including sand fill material as approved by the Client; Supply and install 12.5mm thk, gypsum board suspended ceiling including suspension system, paints as required specification and material as approved by the Client including frames supports, access openings and all other accessories to complete as shown in; 4.5 KG CO2 Type Fire Extinguishers; 6 KG ABC Type Fire Extinguishers; 15 mm dia.; 25 mm dia.; 32 mm dia.; 40 mm dia.; 80 mm dia.; 200 mm dia.; 250 mm dia.; Supply and installation of western water closet, flush tank type, heavy duty, one piece SASO certified, approval of client, dimesion not less than 40 cm width, 68 cm length including all other accessories as per drawings and specification; Supply and installation of urinal, heavy duty, one piece SASO certified, approval of client, including all other accessories as per drawings and specification; Supply and installation of Bib tap with Perenial Hose (BPH) with stainless steel flexible hose and cast brass chromeplated hand including all other accessories to complete as per drawing and specification.; Supply, installation, testing and commissioning of Lavatory / wash basin with counter for toilets, built in soap dispenser, mixer, single lever arm including all accessories as per drawings and specification and to the approval of the client; Provide and install paper towel dispenser, surface mounted, satin finish stainless steel as per approved sample including accessories.; Provide and install mirror as per approved sample including frames, backing and all accessories to complete.; Provide and install towel ring, surface mounted, satin finish stainless steel as per approved sample including accessories.; Hose Bib; Valve Chamber; Retarding Chamber; Inspection Chamber; Neutralization pit 1000x1000mm; 25mm diameter; 32mm diameter; 40mm diameter; 50mm diameter; 75mm diameter; 80mm diameter; 100mm diameter; 110mm diameter; 15mm diameter; 20mm diameter; 150mm diameter; 200mm diameter; 250mm diameter; 13mm diameter; Gully Trap; Floor drain 75mm; Floor cleanout 110mm; Roof drain; 20 mm; 25 mm; 32 mm; 40 mm; 50 mm; 100 mm; 150 mm; 200 mm; 250 mm; Altitude control valve assembly, size 200 mm; GRP water tanks capacity of each 1000 liter complete with all fittings, all valves and concrete pad; Water Heater 30ltr; Supply, install, connection, testing and commssionigs horizontal bladder type pressure tank with capacity 1500 liter according to manufacturer's detail and specification - PS-PT-1; Supply, install, connection, testing and commssionigs horizontal bladder type pressure tank with capacity 300 liter according to manufacturer's detail and specification - PS-PT-2; Chemical DosingTank (CDT) 6000 liters capacity polytheylene tank With pump assembly.; Actual capacity 1.0 Ton; Actual capacity 1.5 Ton; Actual capacity 2.0 Ton; Air Flow 280 l/s @ 150 pa; Air Flow 3200 l/s @ 100 pa; Air Flow 110 l/s @ 50 pa; Air Flow 70 l/s @ 50 pa; Air Flow 35 l/s @ 35 pa; Air Flow 105 l/s @ 50 pa; Air Flow 180 l/s @ 0.01 pa; Supply and install flexible duct with insulation; size 8 inch dia.; Supply and install flexible duct with insulation; size 10 inch dia.; Package Unit 57.4 kW "thermal"; Variable Air Volume (VAV 01); Variable Air Volume (VAV 02); Variable Air Volume (VAV 03); Variable Air Volume (VAV 04); Variable Air Volume (VAV 05); Variable Air Volume (VAV 06); Galvanized sheet metal ducts; Supply Liner Slot diffuser 3 slots 1 inch; Return Liner Slot diffuser 3 slots 1 inch; Exhaust Grill 150mm x 150mm; Exhast Air fan 515 l/s @ 150 pa; Exhast Air fan 3200 l/s @ 100 pa; Sand trap louver 2400mm x 1000mm; Sound attenuator size 1050 x 650 x 1000 m; Fire suppression system FM200 57 kg fill capacity consists of 2 cylinders, duty + standby, complete with all required mechanical, electrical , and control items to install, test, and operate the system.; Fire suppression system NOVEC 1230 134.1 kg fill capacity consists of 2 cylinders, duty + standby, complete with all required mechanical, electrical , and control items to install, test, and operate the system.; Fire suppression system NOVEC 1230 29.2 kg fill capacity consists of 2 cylinders, duty + standby, complete with all required mechanical, electrical , and control items to install, test, and operate the system.; Fire suppression system NOVEC 1230 53.5 kg fill capacity consists of 2 cylinders, duty + standby, complete with all required mechanical, electrical , and control items to install, test, and operate the system.; Fire suppression system NOVEC 1230 82.3 kg fill capacity consists of 2 cylinders, duty + standby, complete with all required mechanical, electrical , and control items to install, test, and operate the system.; Fire suppression system NOVEC 1230 42.5 kg fill capacity consists of 2 cylinders, duty + standby, complete with all required mechanical, electrical , and control items to install, test, and operate the system.; Supply and install steel ladder with cage at pump room for as per drawings and specification.; Overhead Travelling Crane; lifting capacity 1.50 ton manual type all to manufacturer's detail and specifications. - PS-OC-1; Hot dipped Galvanized steel Trench Grating; Hot dipped Galvanized steel Channel Cover Plate; Steel Frame and Cover 1200 x 1200; Vent Cowl (Standard Size); Steel Handrail of 1.2m height; 30W LED linear Pendant lighting; 30W LED Emergency linear Pendant lighting; 47W LED linear Pendant lighting; 47W LED Emergency linear Pendant lighting; 13W recess mounted LED down light fitting; 13W recess emergency mounted LED down light fitting with 1.5 Hr Battery; 10.4W LED Exit light with 1.5 Hr Battery; Distribution board (MDB-PR-01); Distribution board (LPDB-PR-01); Distribution board (MDB-CB-01); Distribution board (LPDB-CR-01); 13A,1? 230V Twin socket outlet with switch; 13A,1? 230V Industrial socket outlet with switch; 13A, Twin Socket outlet, Weather Proof; 400A, 3P Disconnect switch; 30A, 2P AC Disconnect Switch; 30A, 3P AC Disconnect Switch; 60A, 3P AC Disconnect Switch; 20A Duplex Receptacle Floor Mounted; Single gang Lighting switch; Double gang Lighting switch; 2way Single gang Lighting switch; Cable Tray 300 mm X 100 mm; 4CX6 Cu. XLPE FRLSZH Cable; 4CX10 Cu. XLPE FRLSZH Cable; 4CX16 Cu. XLPE FRLSZH Cable; 4CX25 Cu. XLPE FRLSZH Cable; 4CX35 Cu. XLPE FRLSZH Cable; 4CX185 Cu. XLPE FRLSZH Cable; 120mm2 Tinned copper wire; Grounding rod 20mmX3m; Grounding rod with Pit 20mmX3m; Earthing Bar; Cu earth strip 25X4 mm; 1.5m Air terminal; 4mm2 Cu./FRLSZH Cable; 6mm2 Cu./FRLSZH Cable; 10mm2 Cu./FRLSZH Cable; 16mm2 Cu./FRLSZH Cable; 95mm2 Cu./FRLSZH Cable; 120mm2 Cu./FRLSZH Cable; 30KVA, 400V, 3PH, 60Hz UPS; CB-UPS-01 panel; Supply, install and connection of a SCADA server cum workstation complete with network rack, network switch, sensors, printer, armoured cables with cable tray & conduits, level transmitter, liquid flow meter, quality sensor (COD,BOD,pH), pressure transmit; Fire Alarm Control panel with fire alarm zoning with Mimic panel with fire alarm zoning; Supply, install to site and installation of the Aspirating Smoke Detector complete with accessories and pipes; Supply, install to site and installation of the addressable manual call point with operation safety glass breaking and pushbutton; Supply, install to site and installation of the photoelectric smoke detector with base; Supply, install to site and installation of the heat detector with base; Supply, install to site and installation of multi criteria sensors with base; Supply, install to site and installation of Hydrogen detector; Supply, install to site and installation of Duct detector; Sounder With Beacon; Remote LED Indicator; Single Channel Interface Module; Addressable Control module for Sounders; Addressable relay module for interface; Addressable monitor module for interface; Supply, install to site and installation Fire loop cable; Supply, install to site and installation of power cable; Fire Fighter’s Telephone Centre; Fireman’s Telephone Jack; Voice Command Center; DACT (Auto - Dailer) for 24x7 Civil Defence; Transmission Communication cable - Fiber Optics; Transmission Communication cable - Ethernet Cable; Supply, install to site and installation of power supply system for fire alarm control panel; Pump Set for Irrigation Supply (IRR01 / IRR02); Pump Set for Drainage System; Pump Set for SW Force Main (1W+1S); Pump Set for FF Supply (FP01.FP02); Pump Set for Domestic Supply (BP01 / BP02); acoustical tiles suspended ceiling 600x600mm concealed metal; physical units [1945.6 h] |
| 1 | **Handing over and close out** | 2027-06-26 → 2027-06-29 (+3d) | 2027-07-22 → 2027-07-27 (+5d) |  |  |
| 2 | **As-Built** | 2027-06-26 → 2027-06-29 (+3d) | 2027-07-22 → 2027-07-21 (-1d) |  |  |
| HO-100 | Submission As-Built Drawing For Sewage Network | 2027-07-01 → 2027-06-29 (-2d) | 2027-07-12 → 2027-07-10 (-2d) | none → -101d |  |
| HO-130 | Submission As-Built Drawing For Pond | 2027-07-01 → 2027-06-29 (-2d) | 2027-07-12 → 2027-07-10 (-2d) | none → -101d |  |
| HO-140 | Submission As-Built Drawing For Roads Network | 2027-06-26 → 2027-06-29 (+3d) | 2027-07-06 → 2027-07-10 (+4d) | none → -101d |  |
| HO-150 | Submission As-Built Drawing For Street Lighting Network | 2027-06-26 → 2027-06-29 (+3d) | 2027-07-06 → 2027-07-10 (+4d) | none → -101d |  |
| HO-160 | Submission As-Built Drawing For Telecom and Light Current Networks | 2027-06-26 → 2027-06-29 (+3d) | 2027-07-06 → 2027-07-10 (+4d) | none → -101d |  |
| HO-180 | Submission As-Built Drawing For Irrigation Network | 2027-07-01 → 2027-06-29 (-2d) | 2027-07-12 → 2027-07-10 (-2d) | none → -101d |  |
| HO-200 | Submission As-Built Drawing For Storm Network | 2027-07-01 → 2027-07-06 (+5d) | 2027-07-12 → 2027-07-17 (+5d) | none → -107d |  |
| HO-170 | Submission As-Built Drawing For Medium Voltage Network | 2027-07-15 → 2027-07-13 (-2d) | 2027-07-22 → 2027-07-20 (-2d) | none → -110d |  |
| HO-190 | As-Built Drawing For Potable Water Network | 2027-07-15 → 2027-07-13 (-2d) | 2027-07-22 → 2027-07-20 (-2d) | none → -110d |  |
| HO-210 | Submission As-Built Drawing For Utility Buildings | 2027-07-11 → 2027-07-13 (+2d) | 2027-07-19 → 2027-07-21 (+2d) | none → -111d |  |
| 1 | **De-Mobilization Works** | 2027-06-28 → 2027-07-01 (+3d) | 2027-07-18 → 2027-07-21 (+3d) |  |  |
| HO-230 | Remove Temporary Car Shades | 2027-06-28 → 2027-07-01 (+3d) | 2027-07-08 → 2027-07-12 (+4d) | none → -103d |  |
| HO-220 | Removing Portable Caravan | 2027-07-01 → 2027-07-05 (+4d) | 2027-07-08 → 2027-07-12 (+4d) | none → -111d |  |
| HO-120 | Remove material stock & Storage area | 2027-07-10 → 2027-07-13 (+3d) | 2027-07-18 → 2027-07-21 (+3d) | none → -111d |  |
| 3 | **Handing Over** | 2027-06-30 → 2027-07-04 (+4d) | 2027-07-22 → 2027-07-27 (+5d) |  |  |
| HO-240 | Final Walkthrough and Inspection | 2027-06-30 → 2027-07-04 (+4d) | 2027-07-08 → 2027-07-12 (+4d) | none → -103d |  |
| HO-250 | Review B.O.Q Qty. to ensure compliance with the actual status | 2027-06-30 → 2027-07-04 (+4d) | 2027-07-08 → 2027-07-12 (+4d) | none → -103d |  |
| HO-260 | Review FIR Approval to ensure compliance with the actual status | 2027-06-30 → 2027-07-04 (+4d) | 2027-07-08 → 2027-07-12 (+4d) | none → -103d |  |
| HO-270 | Review the sample drawing to ensure compliance with the actual status | 2027-06-30 → 2027-07-04 (+4d) | 2027-07-08 → 2027-07-12 (+4d) | none → -111d |  |
| HO-280 | Punch List Completion | 2027-07-10 → 2027-07-13 (+3d) | 2027-07-18 → 2027-07-21 (+3d) | none → -111d |  |
| HO-110 | Final Testing Work | 2027-07-15 → 2027-07-20 (+5d) | 2027-07-22 → 2027-07-27 (+5d) | none → -116d |  |

## Version 7 (data date 2026-11-16, saved 2026-11-18, file DHRT-01-001-BL00.R01-53update16-11-2026.xer)

Last finish 2027-07-27 → 2027-08-03 (+7d). Complete tasks 380 → 383.

Changed:

| ID | Task | Start | Finish | Complete | Total float |
| --- | --- | --- | --- | --- | --- |
| MS | **Key Milestones** |  | 2027-07-27 → 2027-08-03 (+7d) |  |  |
| CM | **Contractual Milestones** |  | 2027-07-27 → 2027-08-03 (+7d) |  |  |
| MS-CF-ENG | Completion of Submitting and Approval of Shopdrawing and Materials | 2026-12-06 → 2026-12-13 (+7d) | 2026-12-06 → 2026-12-13 (+7d) |  | -115d → -121d |
| MS-CF-SW | Completion of Construction Works for Sewage Network | 2027-03-22 → 2027-03-29 (+7d) | 2027-03-22 → 2027-03-29 (+7d) |  | -101d → -107d |
| MS-CF-MV | Completion of Construction Works for Medium Voltage Network | 2027-05-01 → 2027-05-08 (+7d) | 2027-05-01 → 2027-05-08 (+7d) |  | -86d → -92d |
| MS-CF-IR | Completion of Construction Works for Irrigation Network | 2027-05-11 → 2027-05-24 (+13d) | 2027-05-11 → 2027-05-24 (+13d) |  | -74d → -80d |
| MS-CF-PW | Completion of Construction Works for Potable Water Network | 2027-05-11 → 2027-05-24 (+13d) | 2027-05-11 → 2027-05-24 (+13d) |  | -74d → -80d |
| MS-CF-TE | Completion of Construction Works for Telecom and Light Current Networks | 2027-05-25 → 2027-06-01 (+7d) | 2027-05-25 → 2027-06-01 (+7d) |  | -81d → -87d |
| MS-MO-20 | Completion of Storm Drainage Ponds | 2027-05-25 → 2027-06-01 (+7d) | 2027-05-25 → 2027-06-01 (+7d) |  | -107d → -113d |
| MS-CF-LO | Completion of Construction Works for Low Voltage Network | 2027-05-26 → 2027-06-02 (+7d) | 2027-05-26 → 2027-06-02 (+7d) |  | -82d → -88d |
| MS-CF-RD | Completion of Construction Works for Road Works | 2027-05-27 → 2027-06-03 (+7d) | 2027-05-27 → 2027-06-03 (+7d) |  | -84d → -90d |
| MS-CF-SD | Completion of Construction Works for Storm Drainage Network | 2027-05-31 → 2027-06-07 (+7d) | 2027-05-31 → 2027-06-07 (+7d) |  | -86d → -92d |
| MS-CF-SL | Completion of Construction Works for Street Lighting Network | 2027-05-31 → 2027-06-07 (+7d) | 2027-05-31 → 2027-06-07 (+7d) |  | -86d → -92d |
| MS-CF-TSE | Completion of Construction Works for Treated Sewage Effluent Network | 2027-06-03 → 2027-06-10 (+7d) | 2027-06-03 → 2027-06-10 (+7d) |  | -70d → -76d |
| MS-MO-10 | Completion of Sewage Pump Station | 2027-06-24 → 2027-07-01 (+7d) | 2027-06-24 → 2027-07-01 (+7d) |  | -88d → -94d |
| MS-MO-50 | Completion of Water Pump Station | 2027-06-24 → 2027-07-01 (+7d) | 2027-06-24 → 2027-07-01 (+7d) |  | -107d → -113d |
| MS-MO-60 | Completion of Irrigation and Potable Tank | 2027-06-30 → 2027-07-07 (+7d) | 2027-06-30 → 2027-07-07 (+7d) |  | -93d → -99d |
| MS-MO-40 | Completion of Control Room | 2027-07-19 → 2027-07-26 (+7d) | 2027-07-19 → 2027-07-26 (+7d) |  | -109d → -115d |
| MS-CF-PF | Project Completion Date | 2027-07-27 → 2027-08-03 (+7d) | 2027-07-27 → 2027-08-03 (+7d) |  | -116d → -122d |
| CM1 | **Control Milestones** |  | 2026-11-09 → 2026-11-16 (+7d) |  |  |
| 2 | **The Employer** |  | 2026-11-09 → 2026-11-16 (+7d) |  |  |
| MS-MM-120 | Receipt of Advance Payment for the Project From The Employer | 2026-11-09 → 2026-11-16 (+7d) | 2026-11-09 → 2026-11-16 (+7d) |  | -60d → -66d |
| ENG | **Engineering Works** |  | 2026-12-06 → 2026-12-13 (+7d) |  |  |
| SD11 | **Material Submittals and Approvals** |  | 2026-12-06 → 2026-12-13 (+7d) |  |  |
| 1 | **Long Lead Time Items** | 2026-11-09 → 2026-11-16 (+7d) | 2026-12-06 → 2026-12-13 (+7d) |  |  |
| 2 | **Superstructure Works** | 2026-11-09 → 2026-11-16 (+7d) | 2026-12-06 → 2026-12-13 (+7d) |  |  |
| SL | **Sewage Pump Stations** | 2026-11-09 → 2026-11-16 (+7d) | 2026-11-22 → 2026-11-29 (+7d) |  |  |
| 1 | **Submission of Material** | 2026-11-09 → 2026-11-16 (+7d) | 2026-11-15 → 2026-11-22 (+7d) |  |  |
| ENG-MT-SPS-MC-S-100 | Material Submittal for Electromechanical Works for Pump Station | 2026-11-09 → 2026-11-16 (+7d) | 2026-11-15 → 2026-11-22 (+7d) |  | -103d → -109d |
| 2 | **Approval of Material** | 2026-11-16 → 2026-11-23 (+7d) | 2026-11-22 → 2026-11-29 (+7d) |  |  |
| ENG-MT-SPS-MC-A-110 | Material Approval for Electromechanical Works for Pump Station | 2026-11-16 → 2026-11-23 (+7d) | 2026-11-22 → 2026-11-29 (+7d) |  | -103d → -109d |
| SL1 | **Storage Tank (TSE)** | 2026-11-09 → 2026-11-16 (+7d) | 2026-12-06 → 2026-12-13 (+7d) |  |  |
| 1 | **Submission of Material** | 2026-11-09 → 2026-11-16 (+7d) | 2026-11-22 → 2026-11-29 (+7d) |  |  |
| ENG-MT-TSE-MC-S-110 | Material Submittal for Electromechanical Works for Storage Tank (TSE) | 2026-11-09 → 2026-11-16 (+7d) | 2026-11-22 → 2026-11-29 (+7d) |  | -115d → -121d |
| 2 | **Approval of Material** | 2026-11-23 → 2026-11-30 (+7d) | 2026-12-06 → 2026-12-13 (+7d) |  |  |
| ENG-MT-TSE-MC-A-120 | Material Approval for Electromechanical Works for Storage Tank (TSE) | 2026-11-23 → 2026-11-30 (+7d) | 2026-12-06 → 2026-12-13 (+7d) |  | -115d → -121d |
| PROC | **Procurement Cycle** |  | 2027-06-30 → 2027-07-07 (+7d) |  |  |
| NLL | **Short Lead Time Items** |  | 2027-05-20 → 2027-05-27 (+7d) |  |  |
| INF | **Infrastructure Networks** |  | 2027-05-20 → 2027-05-27 (+7d) |  |  |
| SD | **Storm Drainage Network** |  | 2027-03-23 → 2027-03-30 (+7d) |  |  |
| PO | **Issuance of Purchase Orders** |  | 2026-12-13 → 2026-12-20 (+7d) |  |  |
| TE1 | **Storm Drainage Ponds** | 2026-12-07 → 2026-12-14 (+7d) | 2026-12-13 → 2026-12-20 (+7d) |  |  |
| PRO-DPO-CV-PO-10 | Issuance of Purchase Order for Materials of Storm Drainage Ponds | 2026-12-07 → 2026-12-14 (+7d) | 2026-12-13 → 2026-12-20 (+7d) |  | -115d → -121d |
| MF | **Manufacturing of Material** |  | 2027-02-25 → 2027-03-04 (+7d) |  |  |
| TE | **Storm Drainage Ponds** | 2026-12-14 → 2026-12-21 (+7d) | 2027-02-25 → 2027-03-04 (+7d) |  |  |
| PRO-DPO-CV-MF-10 | Manufacturing of Materials of Storm Drainage Ponds | 2026-12-14 → 2026-12-21 (+7d) | 2027-02-25 → 2027-03-04 (+7d) |  | -115d → -121d |
| 1DL | **1st Material Delivery & Site Inspection** |  | 2027-03-02 → 2027-03-13 (+11d) |  |  |
| TE2 | **Storm Drainage Ponds** | 2027-02-27 → 2027-03-06 (+7d) | 2027-03-02 → 2027-03-13 (+11d) |  |  |
| PRO-DPO-CV-1DL-10 | 1ST Material Delivery for Materials of Drainage Ponds | 2027-02-27 → 2027-03-06 (+7d) | 2027-03-02 → 2027-03-13 (+11d) |  | -115d → -121d |
| DL | **Material Delivery & Site Inspection** |  | 2027-03-23 → 2027-03-30 (+7d) |  |  |
| TE3 | **Storm Drainage Ponds** | 2027-03-04 → 2027-03-15 (+11d) | 2027-03-23 → 2027-03-30 (+7d) |  |  |
| PRO-DPO-CV-DL-10 | Material Delivery & Site Inspection for Materials of Storm Drainage Ponds | 2027-03-04 → 2027-03-15 (+11d) | 2027-03-23 → 2027-03-30 (+7d) |  | -116d → -122d |
| SW | **Sewage Network** |  | 2026-12-14 → 2026-12-21 (+7d) |  |  |
| 1DL | **1st Material Delivery & Site Inspection** |  | 2026-12-09 → 2026-12-16 (+7d) |  |  |
| 1 | **Main Line Sections** |  | 2026-12-08 → 2026-12-15 (+7d) |  |  |
| PRO-SW-1DL-100 | 1ST Material Delivery for Main Line Pipes of Sewage Network |  | 2026-11-10 → 2026-11-17 (+7d) | 50% → 73% | -61d → -67d |
| PRO-SW-1DL-110 | 1ST Material Delivery for Manholes of Sewage Network |  | 2026-12-08 → 2026-12-15 (+7d) | 50% → 73% | -83d → -89d |
| 3 | **Testing and Finishes** |  | 2026-12-09 → 2026-12-16 (+7d) |  |  |
| PRO-SW-1DL-120 | 1ST Material Delivery for Manholes Covers of Sewage Network |  | 2026-12-09 → 2026-12-16 (+7d) | 50% → 75% | -78d → -84d |
| DL | **Material Delivery & Site Inspection** |  | 2026-12-14 → 2026-12-21 (+7d) |  |  |
| 1 | **Main Line Sections** |  | 2026-12-14 → 2026-12-21 (+7d) |  |  |
| PRO-R25-SW-DL-100 | Material Delivery & Site Inspection of Main Line Pipes for Sewage Network |  | 2026-12-14 → 2026-12-21 (+7d) | 50% → 75% | -78d → -84d |
| PRO-R25-SW-DL-110 | Material Delivery & Site Inspection of Manholes for Sewage Network |  | 2026-12-10 → 2026-12-17 (+7d) | 50% → 75% | -83d → -89d |
| 3 | **Testing and Finishes** |  | 2026-12-12 → 2026-12-19 (+7d) |  |  |
| PRO-R25-SW-DL-120 | Material Delivery & Site Inspection of Manholes Covers for Sewage Network |  | 2026-12-12 → 2026-12-19 (+7d) | 50% → 75% | -78d → -84d |
| TSE | **Treated Sewage Effluent (Tse)** | 2026-11-09 → 2026-11-16 (+7d) | 2027-01-07 → 2027-01-14 (+7d) |  |  |
| PO | **Issuance of Purchase Orders** | 2026-11-09 → 2026-11-16 (+7d) | 2026-11-16 → 2026-11-23 (+7d) |  |  |
| PRO-TSE-PO-120 | Issuance of Purchase Order for Materials of Treated Sewage Effluent (Tse) | 2026-11-09 → 2026-11-16 (+7d) | 2026-11-16 → 2026-11-23 (+7d) |  | -100d → -106d |
| MF | **Manufacturing of Material** | 2026-11-17 → 2026-11-24 (+7d) | 2026-12-14 → 2026-12-21 (+7d) |  |  |
| PRO-TSE-MF-120 | Manufacturing of Materials for Treated Sewage Effluent (Tse) | 2026-11-17 → 2026-11-24 (+7d) | 2026-12-14 → 2026-12-21 (+7d) |  | -100d → -106d |

| ID | Task | Start | Finish | Total float |
| --- | --- | --- | --- | --- |
| 1DL | **1st Material Delivery & Site Inspection** | 2026-12-15 → 2026-12-22 (+7d) | 2026-12-22 → 2026-12-29 (+7d) |  |
| PRO-TSE-1DL-120 | 1ST Material Delivery for Materials of Treated Sewage Effluent (Tse) | 2026-12-15 → 2026-12-22 (+7d) | 2026-12-22 → 2026-12-29 (+7d) | -100d → -106d |
| DL | **Material Delivery & Site Inspection** | 2026-12-23 → 2026-12-30 (+7d) | 2027-01-07 → 2027-01-14 (+7d) |  |
| PRO-R25-TSE-DL-120 | Material Delivery & Site Inspection of Materials for Treated Sewage Effluent (Tse) | 2026-12-23 → 2026-12-30 (+7d) | 2027-01-07 → 2027-01-14 (+7d) | -100d → -106d |
| PW | **Potable Water Network** |  | 2027-04-17 → 2027-04-24 (+7d) |  |
| PO | **Issuance of Purchase Orders** |  | 2026-11-21 → 2026-11-28 (+7d) |  |
| 3 | **Fire Hydrant** | 2026-11-09 → 2026-11-16 (+7d) | 2026-11-14 → 2026-11-21 (+7d) |  |
| PRO-PW-PO-120 | Issuance of Purchase Order for Fire Hydrants of Potable Water Network | 2026-11-09 → 2026-11-16 (+7d) | 2026-11-14 → 2026-11-21 (+7d) | -104d → -110d |
| 4 | **Testing and Finishes** | 2026-11-15 → 2026-11-22 (+7d) | 2026-11-21 → 2026-11-28 (+7d) |  |
| PRO-PW-PO-130 | Issuance of Purchase Order for Surface Box of Potable Water Network | 2026-11-15 → 2026-11-22 (+7d) | 2026-11-21 → 2026-11-28 (+7d) | -104d → -110d |
| MF | **Manufacturing of Material** |  | 2027-01-18 → 2027-01-25 (+7d) |  |
| 1 | **Main Line Sections** |  | 2026-12-06 → 2026-12-13 (+7d) |  |
| PRO-PW-MF-110 | Manufacturing of Valves for Potable Water Network | 2026-11-09 → 2026-11-16 (+7d) | 2026-12-06 → 2026-12-13 (+7d) | -59d → -65d |
| 3 | **Fire Hydrant** | 2026-12-07 → 2026-12-14 (+7d) | 2026-12-23 → 2026-12-30 (+7d) |  |
| PRO-PW-MF-120 | Manufacturing of Fire Hydrants for Potable Water Network | 2026-12-07 → 2026-12-14 (+7d) | 2026-12-23 → 2026-12-30 (+7d) | -59d → -65d |
| 4 | **Testing and Finishes** | 2026-11-22 → 2026-11-29 (+7d) | 2027-01-18 → 2027-01-25 (+7d) |  |
| PRO-PW-MF-130 | Manufacturing for Surface Box of Potable Water Network | 2026-11-22 → 2026-11-29 (+7d) | 2027-01-18 → 2027-01-25 (+7d) | -90d → -96d |
| 1DL | **1st Material Delivery & Site Inspection** |  | 2027-01-26 → 2027-02-02 (+7d) |  |
| 1 | **Main Line Sections** |  | 2027-01-26 → 2027-02-02 (+7d) |  |
| PRO-PW-1DL-110 | 1ST Material Delivery for Valves of Potable Water Network | 2027-01-19 → 2027-01-26 (+7d) | 2027-01-26 → 2027-02-02 (+7d) | -89d → -95d |
| 3 | **Fire Hydrant** | 2027-01-19 → 2027-01-26 (+7d) | 2027-01-26 → 2027-02-02 (+7d) |  |
| PRO-PW-1DL-120 | 1ST Material Delivery for Fire Hydrants of Potable Water Network | 2027-01-19 → 2027-01-26 (+7d) | 2027-01-26 → 2027-02-02 (+7d) | -81d → -87d |
| 4 | **Testing and Finishes** | 2027-01-19 → 2027-01-26 (+7d) | 2027-01-26 → 2027-02-02 (+7d) |  |
| PRO-PW-1DL-130 | 1ST Material Delivery for Finishes of Potable Water Network | 2027-01-19 → 2027-01-26 (+7d) | 2027-01-26 → 2027-02-02 (+7d) | -82d → -88d |
| DL | **Material Delivery & Site Inspection** |  | 2027-04-17 → 2027-04-24 (+7d) |  |
| 1 | **Main Line Sections** |  | 2027-02-20 → 2027-02-27 (+7d) |  |
| PRO-R25-PW-DL-100 | Material Delivery & Site Inspection of Main Line Pipes and Materials for Potable Water Network |  | 2027-01-09 A → 2026-11-10 A (-60d) |  |
| PRO-R25-PW-DL-110 | Material Delivery & Site Inspection of Valves for Potable Water Network | 2027-01-27 → 2027-02-03 (+7d) | 2027-02-20 → 2027-02-27 (+7d) | -89d → -95d |
| 3 | **Fire Hydrant** | 2027-01-27 → 2027-02-03 (+7d) | 2027-02-02 → 2027-02-09 (+7d) |  |
| PRO-R25-PW-DL-120 | Material Delivery & Site Inspection of Fire Hydrants for Potable Water Network | 2027-01-27 → 2027-02-03 (+7d) | 2027-02-02 → 2027-02-09 (+7d) | -77d → -83d |
| 4 | **Testing and Finishes** | 2027-01-27 → 2027-02-03 (+7d) | 2027-04-17 → 2027-04-24 (+7d) |  |
| PRO-R25-PW-DL-130 | Material Delivery & Site Inspection for Finishes of Potable Water Network | 2027-01-27 → 2027-02-03 (+7d) | 2027-04-17 → 2027-04-24 (+7d) | -82d → -88d |
| IR | **Irrigation Network** | 2026-11-22 → 2026-11-29 (+7d) | 2027-02-16 → 2027-02-23 (+7d) |  |
| PO | **Issuance of Purchase Orders** | 2026-11-22 → 2026-11-29 (+7d) | 2026-12-01 → 2026-12-08 (+7d) |  |
| 1 | **Main Line Pipes** | 2026-11-22 → 2026-11-29 (+7d) | 2026-12-01 → 2026-12-08 (+7d) |  |
| PRO-IR-PO-100 | Issuance of Purchase Order for Main Line Pipes of Irrigation Network | 2026-11-22 → 2026-11-29 (+7d) | 2026-11-26 → 2026-12-03 (+7d) | -104d → -110d |
| PRO-IR-PO-110 | Issuance of Purchase Order for Valves of Irrigation Network | 2026-11-28 → 2026-12-05 (+7d) | 2026-12-01 → 2026-12-08 (+7d) | -104d → -110d |
| MF | **Manufacturing of Material** | 2026-11-28 → 2026-12-05 (+7d) | 2027-01-14 → 2027-01-21 (+7d) |  |
| 1 | **Main Line Pipes** | 2026-11-28 → 2026-12-05 (+7d) | 2027-01-14 → 2027-01-21 (+7d) |  |
| PRO-IR-MF-100 | Manufacturing of Main Line Pipes for Irrigation Network | 2026-11-28 → 2026-12-05 (+7d) | 2026-12-21 → 2026-12-28 (+7d) | -88d → -94d |
| PRO-IR-MF-110 | Manufacturing of Valves for Irrigation Network | 2026-12-22 → 2026-12-29 (+7d) | 2027-01-14 → 2027-01-21 (+7d) | -88d → -94d |
| 1DL | **1st Material Delivery & Site Inspection** | 2026-12-22 → 2026-12-29 (+7d) | 2027-01-23 → 2027-01-30 (+7d) |  |
| 1 | **Main Line Pipes** | 2026-12-22 → 2026-12-29 (+7d) | 2027-01-23 → 2027-01-30 (+7d) |  |
| PRO-IR-1DL-100 | 1ST Material Delivery for Main Line Pipes of Irrigation Network | 2026-12-22 → 2026-12-29 (+7d) | 2026-12-29 → 2027-01-05 (+7d) | -88d → -94d |
| PRO-IR-1DL-110 | 1ST Material Delivery for Valves of Irrigation Network | 2027-01-16 → 2027-01-23 (+7d) | 2027-01-23 → 2027-01-30 (+7d) | -88d → -94d |
| DL | **Material Delivery & Site Inspection** | 2026-12-30 → 2027-01-06 (+7d) | 2027-02-16 → 2027-02-23 (+7d) |  |
| 1 | **Main Line Pipes** | 2026-12-30 → 2027-01-06 (+7d) | 2027-02-16 → 2027-02-23 (+7d) |  |
| PRO-R25-IR-DL-100 | Material Delivery & Site Inspection of Main Line Pipes for Irrigation Network | 2026-12-30 → 2027-01-06 (+7d) | 2027-01-23 → 2027-01-30 (+7d) | -88d → -94d |
| PRO-R25-IR-DL-110 | Material Delivery & Site Inspection of Valves for Irrigation Network | 2027-01-24 → 2027-01-31 (+7d) | 2027-02-16 → 2027-02-23 (+7d) | -88d → -94d |
| MV | **Medium Voltage Network** | 2026-12-02 → 2026-12-09 (+7d) | 2027-02-16 → 2027-02-23 (+7d) |  |
| PO | **Issuance of Purchase Orders** | 2026-12-02 → 2026-12-09 (+7d) | 2026-12-08 → 2026-12-15 (+7d) |  |
| PRO-MV-PO-100 | Issuance of Purchase Order for Medium Voltage Materials of Medium Voltage Network | 2026-12-02 → 2026-12-09 (+7d) | 2026-12-08 → 2026-12-15 (+7d) | -104d → -110d |
| MF | **Manufacturing of Material** | 2026-12-09 → 2026-12-16 (+7d) | 2027-01-02 → 2027-01-09 (+7d) |  |
| PRO-MV-MF-100 | Manufacturing of Medium Voltage Materials for Medium Voltage Network | 2026-12-09 → 2026-12-16 (+7d) | 2027-01-02 → 2027-01-09 (+7d) | -81d → -87d |
| 1DL | **1st Material Delivery & Site Inspection** | 2027-01-03 → 2027-01-10 (+7d) | 2027-01-10 → 2027-01-17 (+7d) |  |
| PRO-MV-1DL-100 | 1ST Material Delivery for Medium Voltage Materials of Medium Voltage Network | 2027-01-03 → 2027-01-10 (+7d) | 2027-01-10 → 2027-01-17 (+7d) | -81d → -87d |
| DL | **Material Delivery & Site Inspection** | 2027-01-24 → 2027-01-31 (+7d) | 2027-02-16 → 2027-02-23 (+7d) |  |
| PRO-MV-DL-100 | Material Delivery & Site Inspection of Medium Voltage Materials for Medium Voltage Network | 2027-01-24 → 2027-01-31 (+7d) | 2027-02-16 → 2027-02-23 (+7d) | -87d → -93d |
| LV | **Low Voltage Network** | 2026-11-09 → 2026-11-16 (+7d) | 2027-04-19 → 2027-04-26 (+7d) |  |
| PO | **Issuance of Purchase Orders** | 2026-11-09 → 2026-11-16 (+7d) | 2026-12-10 → 2026-12-17 (+7d) |  |
| 1 | **Main Low Voltage Cables Works** | 2026-11-09 → 2026-11-16 (+7d) | 2026-11-16 → 2026-11-23 (+7d) |  |
| PRO-LV-ML-PO-100 | Issuance of Purchase Order for Main Low Voltage Cables of Low Voltage Network | 2026-11-09 → 2026-11-16 (+7d) | 2026-11-16 → 2026-11-23 (+7d) | -116d → -122d |
| 2 | **Service Low Voltage Cables Works** | 2026-11-09 → 2026-11-16 (+7d) | 2026-11-16 → 2026-11-23 (+7d) |  |
| PRO-LV-HC-PO-100 | Issuance of Purchase Order for Service Low Voltage Cables of Low Voltage Network | 2026-11-09 → 2026-11-16 (+7d) | 2026-11-16 → 2026-11-23 (+7d) | -115d → -121d |
| 3 | **Distribution Pillar Works** | 2026-11-17 → 2026-11-24 (+7d) | 2026-12-02 → 2026-12-09 (+7d) |  |
| PRO-LV-DP-PO-100 | Issuance of Purchase Order for Distribution Pillars of Low Voltage Network | 2026-11-17 → 2026-11-24 (+7d) | 2026-11-24 → 2026-12-01 (+7d) | -115d → -121d |
| PRO-LV-DP-PO-110 | Issuance of Purchase Order for Low Voltage Earthing of Low Voltage Network | 2026-11-25 → 2026-12-02 (+7d) | 2026-12-02 → 2026-12-09 (+7d) | -115d → -121d |
| 4 | **Termination and Testing Works** | 2026-12-03 → 2026-12-10 (+7d) | 2026-12-10 → 2026-12-17 (+7d) |  |
| PRO-LV-TT-PO-100 | Issuance of Purchase Order for Cable Lugs of Low Voltage Network | 2026-12-03 → 2026-12-10 (+7d) | 2026-12-10 → 2026-12-17 (+7d) | -115d → -121d |
| MF | **Manufacturing of Material** | 2026-11-17 → 2026-11-24 (+7d) | 2027-03-02 → 2027-03-13 (+11d) |  |

| ID | Task | Start | Finish | Total float |
| --- | --- | --- | --- | --- |
| 1 | **Main Low Voltage Cables Works** | 2026-11-17 → 2026-11-24 (+7d) | 2026-12-21 → 2026-12-28 (+7d) |  |
| PRO-LV-ML-MF-100 | Manufacturing of Main Low Voltage Cables for Low Voltage Network | 2026-11-17 → 2026-11-24 (+7d) | 2026-12-21 → 2026-12-28 (+7d) | -116d → -122d |
| 2 | **Service Low Voltage Cables Works** | 2026-11-17 → 2026-11-24 (+7d) | 2026-12-21 → 2026-12-28 (+7d) |  |
| PRO-LV-HC-MF-100 | Manufacturing of Service Low Voltage Cables for Low Voltage Network | 2026-11-17 → 2026-11-24 (+7d) | 2026-12-21 → 2026-12-28 (+7d) | -94d → -100d |
| 3 | **Distribution Pillar Works** | 2026-11-25 → 2026-12-02 (+7d) | 2027-01-18 → 2027-01-25 (+7d) |  |
| PRO-LV-DP-MF-100 | Manufacturing of Distribution Pillars for Low Voltage Network | 2026-11-25 → 2026-12-02 (+7d) | 2027-01-10 → 2027-01-17 (+7d) | -101d → -107d |
| PRO-LV-DP-MF-110 | Manufacturing of Low Voltage Earthing for Low Voltage Network | 2026-12-03 → 2026-12-10 (+7d) | 2027-01-18 → 2027-01-25 (+7d) | -108d → -114d |
| 4 | **Termination and Testing Works** | 2026-12-12 → 2026-12-19 (+7d) | 2027-03-02 → 2027-03-13 (+11d) |  |
| PRO-LV-TT-MF-100 | Manufacturing of Cable Lugs for Low Voltage Network | 2026-12-12 → 2026-12-19 (+7d) | 2027-03-02 → 2027-03-13 (+11d) | -115d → -121d |
| 1DL | **1st Delivery of Material to Site** | 2026-12-22 → 2026-12-29 (+7d) | 2027-03-03 → 2027-03-14 (+11d) |  |
| 1 | **Main Low Voltage Cables Works** | 2026-12-22 → 2026-12-29 (+7d) | 2027-01-30 → 2027-02-06 (+7d) |  |
| PRO-LV-ML-1DL-100 | 1ST Material Delivery for Main Low Voltage Cables of Low Voltage Network | 2026-12-22 → 2026-12-29 (+7d) | 2027-01-30 → 2027-02-06 (+7d) | -116d → -122d |
| 2 | **Service Low Voltage Cables Works** | 2027-01-31 → 2027-02-07 (+7d) | 2027-02-07 → 2027-02-14 (+7d) |  |
| PRO-LV-HC-1DL-100 | 1ST Material Delivery for Service Low Voltage Cables of Low Voltage Network | 2027-01-31 → 2027-02-07 (+7d) | 2027-02-07 → 2027-02-14 (+7d) | -116d → -122d |
| 3 | **Distribution Pillar Works** | 2027-02-08 → 2027-02-15 (+7d) | 2027-02-23 → 2027-03-02 (+7d) |  |
| PRO-LV-DP-1DL-100 | 1ST Material Delivery for Distribution Pillars of Low Voltage Network | 2027-02-08 → 2027-02-15 (+7d) | 2027-02-15 → 2027-02-22 (+7d) | -116d → -122d |
| PRO-LV-DP-1DL-110 | 1ST Material Delivery for Low Voltage Earthing of Low Voltage Network | 2027-02-16 → 2027-02-23 (+7d) | 2027-02-23 → 2027-03-02 (+7d) | -116d → -122d |
| 4 | **Termination and Testing Works** | 2027-02-24 → 2027-03-03 (+7d) | 2027-03-03 → 2027-03-14 (+11d) |  |
| PRO-LV-TT-1DL-100 | 1ST Material Delivery for Cable Lugs of Low Voltage Network | 2027-02-24 → 2027-03-03 (+7d) | 2027-03-03 → 2027-03-14 (+11d) | -116d → -122d |
| DL | **Delivery of Material to Site** | 2027-01-31 → 2027-02-07 (+7d) | 2027-04-19 → 2027-04-26 (+7d) |  |
| 1 | **Main Low Voltage Cables Works** | 2027-01-31 → 2027-02-07 (+7d) | 2027-02-07 → 2027-02-14 (+7d) |  |
| PRO-LV-ML-DL-100 | Material Delivery of Main Low Voltage Cables for Low Voltage Network | 2027-01-31 → 2027-02-07 (+7d) | 2027-02-07 → 2027-02-14 (+7d) | -108d → -114d |
| 2 | **Service Low Voltage Cables Works** | 2027-02-08 → 2027-02-15 (+7d) | 2027-03-03 → 2027-03-14 (+11d) |  |
| PRO-LV-HC-DL-100 | Material Delivery of Service Low Voltage Cables for Low Voltage Network | 2027-02-08 → 2027-02-15 (+7d) | 2027-03-03 → 2027-03-14 (+11d) | -108d → -114d |
| 3 | **Distribution Pillar Works** | 2027-03-03 → 2027-03-14 (+11d) | 2027-03-29 → 2027-04-05 (+7d) |  |
| PRO-LV-DP-DL-120 | Material Delivery of Low Voltage Earthing for Low Voltage Network | 2027-03-03 → 2027-03-14 (+11d) | 2027-03-29 → 2027-04-05 (+7d) | -108d → -114d |
| PRO-LV-DP-DL-100 | Material Delivery of Distribution Pillars for Low Voltage Network | 2027-03-04 → 2027-03-15 (+11d) | 2027-03-29 → 2027-04-05 (+7d) | -108d → -114d |
| 4 | **Termination and Testing Works** | 2027-03-30 → 2027-04-06 (+7d) | 2027-04-19 → 2027-04-26 (+7d) |  |
| PRO-LV-TT-DL-100 | Material Delivery of Cable Lugs for Low Voltage Network | 2027-03-30 → 2027-04-06 (+7d) | 2027-04-19 → 2027-04-26 (+7d) | -85d → -91d |
| SL | **Street Lighting Network** |  | 2027-05-03 → 2027-05-10 (+7d) |  |
| MF | **Manufacturing of Material** | 2026-12-02 → 2026-12-09 (+7d) | 2027-03-21 → 2027-03-28 (+7d) |  |
| 1 | **Cabling Works** | 2026-12-02 → 2026-12-09 (+7d) | 2026-12-24 → 2026-12-31 (+7d) |  |
| PRO-SL-MF-100 | Manufacturing of Lighting Cables for Street Lighting Network | 2026-12-02 → 2026-12-09 (+7d) | 2026-12-24 → 2026-12-31 (+7d) | -104d → -110d |
| 2 | **Lighting Poles Works** | 2026-12-26 → 2027-01-02 (+7d) | 2027-01-18 → 2027-01-25 (+7d) |  |
| PRO-SL-MF-110 | Manufacturing of Lighting Poles Foundations for Street Lighting Network | 2026-12-26 → 2027-01-02 (+7d) | 2027-01-18 → 2027-01-25 (+7d) | -104d → -110d |
| PRO-SL-MF-120 | Manufacturing of Lighting Poles for Street Lighting Network | 2026-12-26 → 2027-01-02 (+7d) | 2027-01-18 → 2027-01-25 (+7d) | -98d → -104d |
| PRO-SL-MF-140 | Manufacturing of Lighting Fixtures for Street Lighting Network | 2026-12-26 → 2027-01-02 (+7d) | 2027-01-18 → 2027-01-25 (+7d) | -98d → -104d |
| 3 | **Distribution Panel Board** | 2027-01-19 → 2027-01-26 (+7d) | 2027-02-22 → 2027-03-01 (+7d) |  |
| PRO-SL-MF-160 | Manufacturing of Distrubution Panel Boards for Street Lighting Network | 2027-01-19 → 2027-01-26 (+7d) | 2027-02-22 → 2027-03-01 (+7d) | -98d → -104d |
| 4 | **Earthing System Works** | 2026-12-02 → 2026-12-09 (+7d) | 2027-01-17 → 2027-01-24 (+7d) |  |
| PRO-SL-MF-150 | Manufacturing of Lighting Earthing for Street Lighting Network | 2026-12-02 → 2026-12-09 (+7d) | 2027-01-17 → 2027-01-24 (+7d) | -88d → -94d |
| 5 | **Termination and Testing Works** | 2026-12-02 → 2026-12-09 (+7d) | 2027-03-21 → 2027-03-28 (+7d) |  |
| PRO-SL-MF-130 | Manufacturing of Fuse Boxes for Street Lighting Network | 2026-12-02 → 2026-12-09 (+7d) | 2027-02-21 → 2027-02-28 (+7d) | -77d → -83d |
| PRO-SL-MF-170 | Manufacturing of Cable Lugs for Street Lighting Network | 2027-02-22 → 2027-03-01 (+7d) | 2027-03-21 → 2027-03-28 (+7d) | -77d → -83d |
| 1DL | **1st Material Delivery & Site Inspection** | 2026-12-26 → 2027-01-02 (+7d) | 2027-04-04 → 2027-04-11 (+7d) |  |
| 1 | **Cabling Works** | 2026-12-26 → 2027-01-02 (+7d) | 2026-12-31 → 2027-01-07 (+7d) |  |
| PRO-SL-1DL-100 | 1ST Material Delivery for Lighting Cables of Street Lighting Network | 2026-12-26 → 2027-01-02 (+7d) | 2026-12-31 → 2027-01-07 (+7d) | -89d → -95d |
| 2 | **Lighting Poles Works** | 2027-01-19 → 2027-01-26 (+7d) | 2027-02-08 → 2027-02-15 (+7d) |  |
| PRO-SL-1DL-110 | 1ST Material Delivery for Lighting Poles Foundations of Street Lighting Network | 2027-01-19 → 2027-01-26 (+7d) | 2027-01-25 → 2027-02-01 (+7d) | -104d → -110d |
| PRO-SL-1DL-120 | 1ST Material Delivery for Lighting Poles of Street Lighting Network | 2027-01-26 → 2027-02-02 (+7d) | 2027-02-01 → 2027-02-08 (+7d) | -101d → -107d |
| PRO-SL-1DL-140 | 1ST Material Delivery for Lighting Fixtures of Street Lighting Network | 2027-02-02 → 2027-02-09 (+7d) | 2027-02-08 → 2027-02-15 (+7d) | -101d → -107d |
| 3 | **Distribution Panel Board** | 2027-02-23 → 2027-03-02 (+7d) | 2027-03-01 → 2027-03-08 (+7d) |  |
| PRO-SL-1DL-160 | 1ST Material Delivery for Distrubution Panel Boards of Street Lighting Network | 2027-02-23 → 2027-03-02 (+7d) | 2027-03-01 → 2027-03-08 (+7d) | -98d → -104d |
| 5 | **Termination and Testing Works** | 2027-03-02 → 2027-03-13 (+11d) | 2027-03-28 → 2027-04-04 (+7d) |  |
| PRO-SL-1DL-130 | 1ST Material Delivery for Fuse Boxes of Street Lighting Network | 2027-03-02 → 2027-03-13 (+11d) | 2027-03-08 → 2027-03-18 (+10d) | -83d → -89d |
| PRO-SL-1DL-170 | 1ST Material Delivery for Cable Lugs of Street Lighting Network | 2027-03-22 → 2027-03-29 (+7d) | 2027-03-28 → 2027-04-04 (+7d) | -77d → -83d |
| 4 | **Earthing System Works** | 2027-03-29 → 2027-04-05 (+7d) | 2027-04-04 → 2027-04-11 (+7d) |  |
| PRO-SL-1DL-150 | 1ST Material Delivery for Lighting Earthing of Street Lighting Network | 2027-03-29 → 2027-04-05 (+7d) | 2027-04-04 → 2027-04-11 (+7d) | -77d → -83d |
| DL | **Material Delivery & Site Inspection** | 2027-01-02 → 2027-01-09 (+7d) | 2027-05-03 → 2027-05-10 (+7d) |  |
| 1 | **Cabling Works** | 2027-01-02 → 2027-01-09 (+7d) | 2027-01-25 → 2027-02-01 (+7d) |  |
| PRO-R25-SL-DL-100 | Material Delivery & Site Inspection of Lighting Cables for Street Lighting Network | 2027-01-02 → 2027-01-09 (+7d) | 2027-01-25 → 2027-02-01 (+7d) | -89d → -95d |
| 2 | **Lighting Poles Works** | 2027-01-19 → 2027-01-26 (+7d) | 2027-03-08 → 2027-03-18 (+10d) |  |
| PRO-R25-SL-DL-110 | Material Delivery & Site Inspection of Lighting Poles Foundations for Street Lighting Network | 2027-01-19 → 2027-01-26 (+7d) | 2027-02-11 → 2027-02-18 (+7d) | -104d → -110d |
| PRO-R25-SL-DL-120 | Material Delivery & Site Inspection of Lighting Poles for Street Lighting Network | 2027-02-13 → 2027-02-20 (+7d) | 2027-03-08 → 2027-03-18 (+10d) | -104d → -110d |
| PRO-R25-SL-DL-140 | Material Delivery & Site Inspection of Lighting Fixtures for Street Lighting Network | 2027-02-13 → 2027-02-20 (+7d) | 2027-03-08 → 2027-03-18 (+10d) | -104d → -110d |
| 3 | **Distribution Panel Board** | 2027-03-16 → 2027-03-23 (+7d) | 2027-04-08 → 2027-04-15 (+7d) |  |
| PRO-R25-SL-DL-160 | Material Delivery & Site Inspection of Distrubution Panel Boards for Street Lighting Network | 2027-03-16 → 2027-03-23 (+7d) | 2027-04-08 → 2027-04-15 (+7d) | -107d → -113d |
| 4 | **Termination and Testing Works** | 2027-04-10 → 2027-04-17 (+7d) | 2027-05-03 → 2027-05-10 (+7d) |  |
| PRO-R25-SL-DL-130 | Material Delivery & Site Inspection of Fuse Boxes for Street Lighting Network | 2027-04-10 → 2027-04-17 (+7d) | 2027-05-03 → 2027-05-10 (+7d) | -107d → -113d |
| PRO-R25-SL-DL-170 | Material Delivery & Site Inspection of Cable Lugs for Street Lighting Network | 2027-04-10 → 2027-04-17 (+7d) | 2027-05-03 → 2027-05-10 (+7d) | -87d → -93d |

| ID | Task | Start | Finish | Complete | Total float |
| --- | --- | --- | --- | --- | --- |
| 5 | **Earthing System Works** | 2027-04-10 → 2027-04-17 (+7d) | 2027-05-03 → 2027-05-10 (+7d) |  |  |
| PRO-R25-SL-DL-150 | Material Delivery & Site Inspection of Lighting Earthing for Street Lighting Network | 2027-04-10 → 2027-04-17 (+7d) | 2027-05-03 → 2027-05-10 (+7d) |  | -87d → -93d |
| TE | **Telecom and Light Current Network** | 2026-12-02 → 2026-12-09 (+7d) | 2027-03-23 → 2027-03-30 (+7d) |  |  |
| PO | **Issuance of Purchase Orders** | 2026-12-02 → 2026-12-09 (+7d) | 2026-12-24 → 2026-12-31 (+7d) |  |  |
| 1 | **Ducts Works** | 2026-12-02 → 2026-12-09 (+7d) | 2026-12-09 → 2026-12-16 (+7d) |  |  |
| PRO-TE-PO-100 | Issuance of Purchase Order for Ducts forTelecom Network | 2026-12-02 → 2026-12-09 (+7d) | 2026-12-09 → 2026-12-16 (+7d) |  | -83d → -89d |
| 3 | **Manholes Works** | 2026-12-02 → 2026-12-09 (+7d) | 2026-12-09 → 2026-12-16 (+7d) |  |  |
| PRO-TE-PO-110 | Issuance of Purchase Order for Manholes forTelecom Network | 2026-12-02 → 2026-12-09 (+7d) | 2026-12-09 → 2026-12-16 (+7d) |  | -83d → -89d |
| 2 | **CCTV, Telephone, MSN, ACs System Works** | 2026-12-02 → 2026-12-09 (+7d) | 2026-12-24 → 2026-12-31 (+7d) |  |  |
| PRO-CTV-PO-100 | Issuance of Purchase Order for Civil and Finishes Works of CCTV Complete System | 2026-12-02 → 2026-12-09 (+7d) | 2026-12-24 → 2026-12-31 (+7d) |  | -83d → -89d |
| MF | **Manufacturing of Material** | 2026-12-10 → 2026-12-17 (+7d) | 2027-03-01 → 2027-03-08 (+7d) |  |  |
| 1 | **Ducts Works** | 2026-12-10 → 2026-12-17 (+7d) | 2027-01-02 → 2027-01-09 (+7d) |  |  |
| PRO-TE-MF-100 | Manufacturing of Ducts for Telecom Network | 2026-12-10 → 2026-12-17 (+7d) | 2027-01-02 → 2027-01-09 (+7d) |  | -75d → -81d |
| 3 | **Manholes Works** | 2027-01-03 → 2027-01-10 (+7d) | 2027-01-25 → 2027-02-01 (+7d) |  |  |
| PRO-TE-MF-110 | Manufacturing of Manholes for Telecom Network | 2027-01-03 → 2027-01-10 (+7d) | 2027-01-25 → 2027-02-01 (+7d) |  | -75d → -81d |
| 2 | **CCTV, Telephone, MSN, ACs System Works** | 2027-01-26 → 2027-02-02 (+7d) | 2027-03-01 → 2027-03-08 (+7d) |  |  |
| PRO-CTV-MF-100 | Manufacturing of Civil and Finishes Works for CCTV Complete System | 2027-01-26 → 2027-02-02 (+7d) | 2027-03-01 → 2027-03-08 (+7d) |  | -60d → -66d |
| 1DL | **1st Material Delivery & Site Inspection** | 2027-01-03 → 2027-01-10 (+7d) | 2027-03-08 → 2027-03-18 (+10d) |  |  |
| 1 | **Ducts Works** | 2027-01-03 → 2027-01-10 (+7d) | 2027-01-09 → 2027-01-16 (+7d) |  |  |
| PRO-TE-1DL-100 | 1ST Material Delivery for Ducts of Telecom Network | 2027-01-03 → 2027-01-10 (+7d) | 2027-01-09 → 2027-01-16 (+7d) |  | -67d → -73d |
| 3 | **Manholes Works** | 2027-01-26 → 2027-02-02 (+7d) | 2027-02-01 → 2027-02-08 (+7d) |  |  |
| PRO-TE-1DL-110 | 1ST Material Delivery for Manholes of Telecom Network | 2027-01-26 → 2027-02-02 (+7d) | 2027-02-01 → 2027-02-08 (+7d) |  | -75d → -81d |
| 2 | **CCTV, Telephone, MSN, ACs System Works** | 2027-03-02 → 2027-03-13 (+11d) | 2027-03-08 → 2027-03-18 (+10d) |  |  |
| PRO-CTV-1DL-100 | 1ST Material Delivery for Civil and Finishes Works of CCTV Complete System | 2027-03-02 → 2027-03-13 (+11d) | 2027-03-08 → 2027-03-18 (+10d) |  | -60d → -66d |
| DL | **Material Delivery & Site Inspection** | 2027-01-10 → 2027-01-17 (+7d) | 2027-03-23 → 2027-03-30 (+7d) |  |  |
| 1 | **Ducts Works** | 2027-01-10 → 2027-01-17 (+7d) | 2027-01-26 → 2027-02-02 (+7d) |  |  |
| PRO-R25-TE-DL-100 | Material Delivery & Site Inspection for Ducts of Telecom Network | 2027-01-10 → 2027-01-17 (+7d) | 2027-01-26 → 2027-02-02 (+7d) |  | -67d → -73d |
| 3 | **Manholes Works** | 2027-02-02 → 2027-02-09 (+7d) | 2027-02-18 → 2027-02-25 (+7d) |  |  |
| PRO-R25-TE-DL-110 | Material Delivery & Site Inspection of Manholes for Telecom Network | 2027-02-02 → 2027-02-09 (+7d) | 2027-02-18 → 2027-02-25 (+7d) |  | -72d → -78d |
| 2 | **CCTV, Telephone, MSN, ACs System Works** | 2027-03-13 → 2027-03-20 (+7d) | 2027-03-23 → 2027-03-30 (+7d) |  |  |
| PRO-R25-CTV-DL-100 | Material Delivery & Site Inspection of for Civil and Finishes Works of CCTV Complete System | 2027-03-13 → 2027-03-20 (+7d) | 2027-03-23 → 2027-03-30 (+7d) |  | -60d → -66d |
| RD | **Road Works** |  | 2027-05-20 → 2027-05-27 (+7d) |  |  |
| PO | **Issuance of Purchase Orders** |  | 2026-12-10 → 2026-12-17 (+7d) |  |  |
| 1 | **Road Works** |  | 2026-11-16 → 2026-11-23 (+7d) |  |  |
| PRO-RD-PO-190 | Issuance of Purchase Order for Tack Coat Layer for Roads Network | 2026-11-09 → 2026-11-16 (+7d) | 2026-11-16 → 2026-11-23 (+7d) |  | -58d → -64d |
| 2 | **Pavement Works** | 2026-11-09 → 2026-11-16 (+7d) | 2026-11-24 → 2026-12-01 (+7d) |  |  |
| PRO-RD-PO-140 | Issuance of Purchase Order for Interlock Tiles of Landscaping | 2026-11-09 → 2026-11-16 (+7d) | 2026-11-16 → 2026-11-23 (+7d) |  | -67d → -73d |
| PRO-RD-PO-150 | Issuance of Purchase Order for Curbstones of Landscaping | 2026-11-17 → 2026-11-24 (+7d) | 2026-11-24 → 2026-12-01 (+7d) |  | -67d → -73d |
| 3 | **Traffic Signs Boards and Roads Marking** | 2026-11-25 → 2026-12-02 (+7d) | 2026-12-10 → 2026-12-17 (+7d) |  |  |
| PRO-RD-PO-160 | Issuance of Purchase Order for Traffic Signs Boards of Road Works | 2026-11-25 → 2026-12-02 (+7d) | 2026-12-02 → 2026-12-09 (+7d) |  | -67d → -73d |
| PRO-RD-PO-170 | Issuance of Purchase Order for Road Markings of Road Works | 2026-12-03 → 2026-12-10 (+7d) | 2026-12-10 → 2026-12-17 (+7d) |  | -60d → -66d |
| MF | **Manufacturing of Material** |  | 2027-03-17 → 2027-03-24 (+7d) |  |  |
| 1 | **Road Works** |  | 2027-01-13 → 2027-01-20 (+7d) |  |  |
| PRO-RD-MF-190 | Manufacturing of Tack Coat Layer for Roads Network | 2026-11-17 → 2026-11-24 (+7d) | 2027-01-13 → 2027-01-20 (+7d) |  | -58d → -64d |
| 2 | **Pavement Works** | 2027-01-14 → 2027-01-21 (+7d) | 2027-02-07 → 2027-02-14 (+7d) |  |  |
| PRO-RD-MF-140 | Manufacturing of Interlock Tiles for Landscaping | 2027-01-14 → 2027-01-21 (+7d) | 2027-02-07 → 2027-02-14 (+7d) |  | -58d → -64d |
| PRO-RD-MF-150 | Manufacturing of Curbstones for Landscaping | 2027-01-14 → 2027-01-21 (+7d) | 2027-02-06 → 2027-02-13 (+7d) |  | -46d → -52d |
| 3 | **Traffic Signs Boards and Roads Marking** | 2026-12-03 → 2026-12-10 (+7d) | 2027-03-17 → 2027-03-24 (+7d) |  |  |
| PRO-RD-MF-160 | Manufacturing of Traffic Signs Boards for Road Works | 2026-12-03 → 2026-12-10 (+7d) | 2027-03-06 → 2027-03-16 (+10d) |  | -67d → -73d |
| PRO-RD-MF-170 | Manufacturing of Road Markings for Road Works | 2026-12-12 → 2026-12-19 (+7d) | 2027-03-17 → 2027-03-24 (+7d) |  | -60d → -66d |
| 1DL | **1st Material Delivery & Site Inspection** |  | 2027-04-03 → 2027-04-10 (+7d) |  |  |
| 1 | **Road Works** |  | 2027-01-21 → 2027-01-28 (+7d) |  |  |
| PRO-RD-1DL-190 | 1ST Material Delivery for Tack Coat Layer for Roads Network | 2027-01-14 → 2027-01-21 (+7d) | 2027-01-21 → 2027-01-28 (+7d) |  | -48d → -54d |
| 2 | **Pavement Works** | 2027-02-08 → 2027-02-15 (+7d) | 2027-02-23 → 2027-03-02 (+7d) |  |  |
| PRO-RD-1DL-140 | 1ST Material Delivery for Interlock Tiles of Landscaping | 2027-02-08 → 2027-02-15 (+7d) | 2027-02-15 → 2027-02-22 (+7d) |  | -58d → -64d |
| PRO-RD-1DL-150 | 1ST Material Delivery for Curbstones of Landscaping | 2027-02-16 → 2027-02-23 (+7d) | 2027-02-23 → 2027-03-02 (+7d) |  | -54d → -60d |
| 3 | **Traffic Signs Boards and Roads Marking** | 2027-03-18 → 2027-03-25 (+7d) | 2027-04-03 → 2027-04-10 (+7d) |  |  |
| PRO-RD-1DL-170 | 1ST Material Delivery for Road Markings of Road Works | 2027-03-18 → 2027-03-25 (+7d) | 2027-03-25 → 2027-04-01 (+7d) |  | -60d → -66d |
| PRO-RD-1DL-160 | 1ST Material Delivery for Traffic Signs Boards of Road Works | 2027-03-27 → 2027-04-03 (+7d) | 2027-04-03 → 2027-04-10 (+7d) |  | -60d → -66d |
| DL | **Material Delivery & Site Inspection** |  | 2027-05-20 → 2027-05-27 (+7d) |  |  |
| 1 | **Pre-Bituminous Construction** |  | 2026-12-02 → 2026-12-20 (+18d) |  |  |
| PRO-R25-RD-DL-100 | Material Delivery & Site Inspection for Subgrade of Road Works |  | 2026-11-09 → 2026-11-25 (+16d) | 60% → 80% | -38d → -52.39d |
| PRO-R25-RD-DL-110 | Material Delivery & Site Inspection for Aggregate Base Course of Road Works |  | 2026-12-02 → 2026-12-20 (+18d) | 60% → 80% | -38d → -52.39d |
| 4 | **Bituminous Construction** |  | 2027-02-03 → 2027-02-10 (+7d) |  |  |
| PRO-R25-RD-DL-160 | Material Delivery & Site Inspection for Prime Coat Layer of Road Works |  | 2026-12-15 → 2027-01-02 (+18d) | 60% → 80% | -38d → -52.39d |
| PRO-R25-RD-DL-170 | Material Delivery & Site Inspection for Asphaltic Base Course Layer of Road Works |  | 2026-12-28 → 2027-01-14 (+17d) | 60% → 80% | -38d → -52.39d |
| PRO-RD-DL-200 | Material Delivery for Asphaltic Wearing Course Layer for Roads Network |  | 2027-01-10 → 2027-01-27 (+17d) | 60% → 80% | -38d → -52.39d |
| PRO-RD-DL-210 | Material Delivery for Tack Coat Layer for Roads Network | 2027-01-23 → 2027-01-30 (+7d) | 2027-02-03 → 2027-02-10 (+7d) |  | -48d → -54d |
| 2 | **Pavement Works** | 2027-02-16 → 2027-02-23 (+7d) | 2027-03-16 → 2027-03-23 (+7d) |  |  |
| PRO-R25-RD-DL-120 | Material Delivery & Site Inspection of Interlock Tiles for Landscaping | 2027-02-16 → 2027-02-23 (+7d) | 2027-02-28 → 2027-03-07 (+7d) |  | -58d → -64d |

| ID | Task | Start | Finish | Complete | Total float |
| --- | --- | --- | --- | --- | --- |
| PRO-R25-RD-DL-130 | Material Delivery & Site Inspection of Curbstones for Landscaping | 2027-03-01 → 2027-03-08 (+7d) | 2027-03-16 → 2027-03-23 (+7d) |  | -58d → -64d |
| 3 | **Traffic Signs Boards and Roads Marking** | 2027-04-20 → 2027-04-27 (+7d) | 2027-05-20 → 2027-05-27 (+7d) |  |  |
| PRO-R25-RD-DL-150 | Material Delivery & Site Inspection of Road Markings For Road Works | 2027-04-20 → 2027-04-27 (+7d) | 2027-05-02 → 2027-05-09 (+7d) |  | -85d → -91d |
| PRO-R25-RD-DL-140 | Material Delivery & Site Inspection of Traffic Signs Boards For Road Works | 2027-05-03 → 2027-05-10 (+7d) | 2027-05-20 → 2027-05-27 (+7d) |  | -85d → -91d |
| 1 | **Superstructure Works** |  | 2026-12-27 → 2027-01-03 (+7d) |  |  |
| 1 | **Issuance of Purchase Orders** |  | 2026-11-16 → 2026-11-23 (+7d) |  |  |
| SL11 | **Storage Tank (TSE)** | 2026-11-09 → 2026-11-16 (+7d) | 2026-11-16 → 2026-11-23 (+7d) |  |  |
| PRO-TSE-CV-PO-30 | Issuance of Purchase Order for Works for Storage Tank (TSE) | 2026-11-09 → 2026-11-16 (+7d) | 2026-11-16 → 2026-11-23 (+7d) |  | -92d → -98d |
| 2 | **Manufacturing of Material** |  | 2026-12-02 → 2026-12-09 (+7d) |  |  |
| SL11 | **Storage Tank (TSE)** | 2026-11-17 → 2026-11-24 (+7d) | 2026-12-02 → 2026-12-09 (+7d) |  |  |
| PRO-TSE-CV-MF-40 | Manufacturing of Works for Storage Tank (TSE) | 2026-11-17 → 2026-11-24 (+7d) | 2026-12-02 → 2026-12-09 (+7d) |  | -53d → -73.42d |
| 3 | **1st Material Delivery & Site Inspection** |  | 2026-12-10 → 2026-12-17 (+7d) |  |  |
| SL1 | **Water Pump Station** |  | 2026-11-12 → 2026-11-19 (+7d) |  |  |
| PRO-LS-CV-1DL-40 | 1ST Material Delivery for Works of Water Pump Station |  | 2026-11-12 → 2026-11-19 (+7d) | 30% → 70% | -53d → -56.42d |
| SL11 | **Storage Tank (TSE)** | 2026-12-03 → 2026-12-10 (+7d) | 2026-12-10 → 2026-12-17 (+7d) |  |  |
| PRO-TSE-CV-1DL-50 | 1ST Material Delivery for Works for Storage Tank (TSE) | 2026-12-03 → 2026-12-10 (+7d) | 2026-12-10 → 2026-12-17 (+7d) |  | -53d → -73.42d |
| SL111 | **Control Room** |  | 2026-12-09 → 2026-12-16 (+7d) |  |  |
| PRO-TSE-CV-1DL-60 | 1ST Material Delivery for Works for Control Room |  | 2026-12-09 → 2026-12-16 (+7d) | 17% → 70% | -53d → -73.42d |
| SL | **Sewage Pump Stations** |  | 2026-12-03 → 2026-12-10 (+7d) |  |  |
| PRO-SPS-CV-1DL-10 | 1ST Material Delivery for Works of Sewage Pump Station |  | 2026-12-03 → 2026-12-10 (+7d) |  | -53d → -73.42d |
| SL12 | **Gaurd Room** | 2026-12-03 → 2026-12-10 (+7d) | 2026-12-10 → 2026-12-17 (+7d) |  |  |
| PRO-GR-CV-1DL-60 | 1ST Material Delivery for Materials for Gaurd Room | 2026-12-03 → 2026-12-10 (+7d) | 2026-12-10 → 2026-12-17 (+7d) |  | -53d → -73.42d |
| SL121 | **Boundary Fence** |  | 2026-12-06 → 2026-12-13 (+7d) |  |  |
| PRO-FE-CV-1DL-70 | 1ST Material Delivery for Materials for Boundary Fence |  | 2026-12-06 → 2026-12-13 (+7d) | 57% → 80% | -49d → -69.42d |
| 4 | **Material Delivery & Site Inspection** |  | 2026-12-27 → 2027-01-03 (+7d) |  |  |
| SL1 | **Water Pump Station** |  | 2026-11-16 → 2026-11-23 (+7d) |  |  |
| PRO-LS-CV-DL-50 | Material Delivery & Site Inspection for Works for Water Pump Station |  | 2026-11-16 → 2026-11-23 (+7d) | 30% → 80% | -53d → -55d |
| SL11 | **Storage Tank (TSE)** | 2026-11-17 → 2026-11-24 (+7d) | 2026-12-17 → 2026-12-24 (+7d) |  |  |
| PRO-TSE-CV-DL-60 | Material Delivery & Site Inspection for Works for Storage Tank (TSE) | 2026-11-17 → 2026-11-24 (+7d) | 2026-12-17 → 2026-12-24 (+7d) |  | -32d → -52.42d |
| SL111 | **Control Room** |  | 2026-12-23 → 2026-12-30 (+7d) |  |  |
| PRO-TSE-CV-DL-70 | Material Delivery & Site Inspection for Works for Control Room |  | 2026-12-23 → 2026-12-30 (+7d) | 17% → 80% | -52d → -72.42d |
| SL | **Sewage Pump Stations** |  | 2026-12-12 → 2026-12-19 (+7d) |  |  |
| PRO-SPS-CV-DL-10 | Material Delivery & Site Inspection for Works for Pump Station |  | 2026-12-12 → 2026-12-19 (+7d) |  | -52d → -72.42d |
| SL12 | **Gaurd Room** | 2026-12-12 → 2026-12-19 (+7d) | 2026-12-27 → 2027-01-03 (+7d) |  |  |
| PRO-GR-CV-DL-70 | Material Delivery & Site Inspection for Materials for Gaurd Room | 2026-12-12 → 2026-12-19 (+7d) | 2026-12-27 → 2027-01-03 (+7d) |  | -53d → -73.42d |
| SL121 | **Boundary Fence** |  | 2026-12-17 → 2026-12-24 (+7d) |  |  |
| PRO-FE-CV-DL-80 | Material Delivery & Site Inspection for Materials for Boundary Fence |  | 2026-12-17 → 2026-12-24 (+7d) | 57% → 80% | -53d → -73.42d |
| IR1 | **Softscape and Planting Works** | 2026-11-25 → 2026-12-02 (+7d) | 2027-03-15 → 2027-03-22 (+7d) |  |  |
| PO | **Issuance of Purchase Orders** | 2026-11-25 → 2026-12-02 (+7d) | 2026-12-08 → 2026-12-15 (+7d) |  |  |
| 1 | **Main Line Pipes** | 2026-11-25 → 2026-12-02 (+7d) | 2026-12-08 → 2026-12-15 (+7d) |  |  |
| PRO-IR-PO-140 | Issuance of Purchase Order for Softscape and Planting Works | 2026-11-25 → 2026-12-02 (+7d) | 2026-12-01 → 2026-12-08 (+7d) |  | -113d → -119d |
| PRO-IR-PO-150 | Issuance of Purchase Order for Site Furnishings (Seating Bench,Stone Boulders and Gravel) | 2026-12-02 → 2026-12-09 (+7d) | 2026-12-08 → 2026-12-15 (+7d) |  | -103d → -109d |
| MF | **Manufacturing of Material** | 2026-12-02 → 2026-12-09 (+7d) | 2027-02-16 → 2027-02-23 (+7d) |  |  |
| 1 | **Main Line Pipes** | 2026-12-02 → 2026-12-09 (+7d) | 2027-02-16 → 2027-02-23 (+7d) |  |  |
| PRO-IR-MF-140 | Manufacturing of Softscape and Planting Works | 2026-12-02 → 2026-12-09 (+7d) | 2027-02-09 → 2027-02-16 (+7d) |  | -113d → -119d |
| PRO-IR-MF-150 | Manufacturing of Valves for Site Furnishings (Seating Bench,Stone Boulders and Gravel) | 2026-12-09 → 2026-12-16 (+7d) | 2027-02-16 → 2027-02-23 (+7d) |  | -103d → -109d |
| 1DL | **1st Material Delivery & Site Inspection** | 2027-02-10 → 2027-02-17 (+7d) | 2027-02-23 → 2027-03-02 (+7d) |  |  |
| 1 | **Main Line Pipes** | 2027-02-10 → 2027-02-17 (+7d) | 2027-02-23 → 2027-03-02 (+7d) |  |  |
| PRO-IR-1DL-140 | 1ST Material Delivery for Softscape and Planting Works | 2027-02-10 → 2027-02-17 (+7d) | 2027-02-16 → 2027-02-23 (+7d) |  | -113d → -119d |
| PRO-IR-1DL-150 | 1ST Material Delivery for Site Furnishings (Seating Bench,Stone Boulders and Gravel) | 2027-02-17 → 2027-02-24 (+7d) | 2027-02-23 → 2027-03-02 (+7d) |  | -103d → -109d |
| DL | **Material Delivery & Site Inspection** | 2027-02-17 → 2027-02-24 (+7d) | 2027-03-15 → 2027-03-22 (+7d) |  |  |
| 1 | **Main Line Pipes** | 2027-02-17 → 2027-02-24 (+7d) | 2027-03-15 → 2027-03-22 (+7d) |  |  |
| PRO-R25-IR-DL-140 | Material Delivery & Site Inspection of Softscape and Planting Works | 2027-02-17 → 2027-02-24 (+7d) | 2027-02-28 → 2027-03-07 (+7d) |  | -113d → -119d |
| PRO-R25-IR-DL-150 | Material Delivery & Site Inspection of Site Furnishings (Seating Bench,Stone Boulders and Gravel) | 2027-03-01 → 2027-03-08 (+7d) | 2027-03-15 → 2027-03-22 (+7d) |  | -107d → -113d |
| LL | **Long Lead Time Items** |  | 2027-06-30 → 2027-07-07 (+7d) |  |  |
| 1 | **Superstructure Works** |  | 2027-06-30 → 2027-07-07 (+7d) |  |  |
| SL | **Sewage Pump Station** |  | 2027-01-13 → 2027-01-20 (+7d) |  |  |
| 3 | **Material Shipping/Custom Clearance/Delivery** | 2026-11-25 → 2026-12-02 (+7d) | 2026-12-19 → 2026-12-26 (+7d) |  |  |
| PRO-SPS-LL-SH/DL-10 | Material Delivery for Electromechanical Works for Pump Station | 2026-11-25 → 2026-12-02 (+7d) | 2026-12-19 → 2026-12-26 (+7d) |  | -12d → -18d |
| 4 | **Material Site Inspection** | 2026-12-20 → 2026-12-27 (+7d) | 2027-01-13 → 2027-01-20 (+7d) |  |  |
| PRO-SPS-LL-MSI-10 | Material Site Inspection for Electromechanical Works for Pump Station | 2026-12-20 → 2026-12-27 (+7d) | 2027-01-13 → 2027-01-20 (+7d) |  | -12d → -18d |
| SL1 | **Water Pump Station** |  | 2027-01-12 → 2027-01-19 (+7d) |  |  |
| 3 | **Material Shipping/Custom Clearance/Delivery** | 2026-11-25 → 2026-12-02 (+7d) | 2026-12-19 → 2026-12-26 (+7d) |  |  |
| PRO-LS-LL-SH/DL-20 | Material Delivery for Electromechanical Works for Water Pump Station | 2026-11-25 → 2026-12-02 (+7d) | 2026-12-19 → 2026-12-26 (+7d) |  | -11d → -17d |
| 4 | **Material Site Inspection** | 2026-12-20 → 2026-12-27 (+7d) | 2027-01-12 → 2027-01-19 (+7d) |  |  |
| PRO-LS-LL-MSI-20 | Material Site Inspection for Electromechanical Works for Water Pump Station | 2026-12-20 → 2026-12-27 (+7d) | 2027-01-12 → 2027-01-19 (+7d) |  | -11d → -17d |
| SL2 | **Storage Tank (TSE)** | 2026-12-07 → 2026-12-14 (+7d) | 2027-06-30 → 2027-07-07 (+7d) |  |  |
| 1 | **Issuance of Purchase Orders** | 2026-12-07 → 2026-12-14 (+7d) | 2026-12-14 → 2026-12-21 (+7d) |  |  |
| PRO-TSE-LL-PO-30 | Issuance of Purchase Order for Electromechanical Works for Storage Tank (TSE) | 2026-12-07 → 2026-12-14 (+7d) | 2026-12-14 → 2026-12-21 (+7d) |  | -109d → -115d |
| 2 | **Manufacturing of Material** | 2026-12-15 → 2026-12-22 (+7d) | 2027-05-06 → 2027-05-13 (+7d) |  |  |

| ID | Task | Start | Finish | Total float |
| --- | --- | --- | --- | --- |
| PRO-TSE-LL-MF-30 | Manufacturing of Electromechanical Works for Storage Tank (TSE) | 2026-12-15 → 2026-12-22 (+7d) | 2027-05-06 → 2027-05-13 (+7d) | -109d → -115d |
| 3 | **Material Shipping/Custom Clearance/Delivery** | 2027-05-08 → 2027-05-20 (+12d) | 2027-06-06 → 2027-06-13 (+7d) |  |
| PRO-TSE-LL-SH/DL-30 | Material Delivery for Electromechanical Works for Storage Tank (TSE) | 2027-05-08 → 2027-05-20 (+12d) | 2027-06-06 → 2027-06-13 (+7d) | -109d → -115d |
| 4 | **Material Site Inspection** | 2027-06-07 → 2027-06-14 (+7d) | 2027-06-30 → 2027-07-07 (+7d) |  |
| PRO-TSE-LL-MSI-30 | Material Site Inspection for Electromechanical Works for Storage Tank (TSE) | 2027-06-07 → 2027-06-14 (+7d) | 2027-06-30 → 2027-07-07 (+7d) | -109d → -115d |
| CON | **Construction Works** |  | 2027-07-05 → 2027-07-12 (+7d) |  |
| INF | **Infrastructure Networks** |  | 2027-07-05 → 2027-07-12 (+7d) |  |
| IN | **Internal** |  | 2027-07-05 → 2027-07-12 (+7d) |  |
| 1 | **Alignment-RD-01** |  | 2027-06-14 → 2027-06-21 (+7d) |  |
| EW | **Earthworks** |  | 2027-01-20 → 2027-01-27 (+7d) |  |
| EW | **Earthworks** |  | 2027-01-20 → 2027-01-27 (+7d) |  |
| CO-EW-210_R01 | Excavation and Backfilling Works Upto Design Level for Earthworks for Alignment-RD-01(Remaining)-part1 |  | 2027-01-20 → 2027-01-27 (+7d) | -56d → -62d |
| SD | **Storm Drainage Network** |  | 2026-12-31 → 2027-01-07 (+7d) |  |
| CB | **Catch Basin Sections** |  | 2026-12-31 → 2027-01-07 (+7d) |  |
| CO-SD-CB-190 | Installation and Pipes Laying Connection Works for Catch Basins of Storm Drainage Network for Alignment-RD-01 |  | 2026-12-23 → 2026-12-30 (+7d) | -75d → -81d |
| CO-SD-CB-200 | Trench Backfilling and Compaction Works for Catch Basins of Storm Drainage Network for Alignment-RD-01 |  | 2026-12-31 → 2027-01-07 (+7d) | -75d → -81d |
| CO-SD-CB-180 | Trench Excavation and Bedding Works for Catch Basins of Storm Drainage Network for Alignment-RD-01 |  | 2026-12-15 → 2026-12-22 (+7d) | -75d → -81d |
| SW | **Sewage Network** |  | 2027-02-14 → 2027-02-21 (+7d) |  |
| 1 | **Manholes** |  | 2027-02-14 → 2027-02-21 (+7d) |  |
| CO-SW-MH-210 | Excavation Works for Main Line Manholes of Sewage Network for Alignment-RD-01 |  | 2026-12-20 → 2026-12-27 (+7d) | -91d → -97d |
| CO-SW-MH-220 | Installation RC Footing Works for Main Line Manholes of Sewage Network for Alignment-RD-01 |  | 2027-01-03 → 2027-01-10 (+7d) | -91d → -97d |
| CO-SW-MH-230 | Install Grp Liner Wall Works for Main Line Manholes of Sewage Network for Alignment-RD-01 |  | 2027-01-17 → 2027-01-24 (+7d) | -91d → -97d |
| CO-SW-MH-240 | Pouring Grp Liner Wall Works for Main Line Manholes of Sewage Network for Alignment-RD-01 |  | 2027-01-31 → 2027-02-07 (+7d) | -91d → -97d |
| CO-SW-MH-250 | Backfilling Works for Main Line Manholes of Sewage Network for Alignment-RD-01 |  | 2027-02-14 → 2027-02-21 (+7d) | -91d → -97d |
| ML | **Main Line Sections** |  | 2027-02-14 → 2027-02-21 (+7d) |  |
| CO-SW-ML-140 | Trench Excavation and Bedding Works for Main Lines of Sewage Network for Alignment-RD-01 |  | 2027-01-10 → 2027-01-17 (+7d) | -75d → -81d |
| CO-SW-ML-150 | Pipes Laying Works for Main Lines of Sewage Network for Alignment-RD-01 |  | 2027-01-19 → 2027-01-26 (+7d) | -75d → -81d |
| CO-SW-ML-160 | Trench Backfilling and Compaction Works for Main Lines of Sewage Network for Alignment-RD-01 |  | 2027-02-14 → 2027-02-21 (+7d) | -91d → -97d |
| TSE | **Treated Sewage Effluent (Tse)** | 2026-11-09 → 2026-11-16 (+7d) | 2027-02-13 → 2027-02-20 (+7d) |  |
| CO-TSE-ML-200 | Trench Excavation and Bedding Works for Main Lines of Treated Sewage Effluent (Tse) for Alignment-RD-01 | 2026-11-09 → 2026-11-16 (+7d) | 2026-11-16 → 2026-11-23 (+7d) | -55d → -61d |
| CO-TSE-ML-210 | Pipes Laying Works for Main Lines of Treated Sewage Effluent (Tse) for Alignment-RD-01 | 2027-01-09 → 2027-01-16 (+7d) | 2027-01-27 → 2027-02-03 (+7d) | -100d → -106d |
| CO-TSE-ML-230 | Trench Backfilling and Compaction Works for Treated Sewage Effluent (Tse) for Alignment-RD-01 | 2027-01-28 → 2027-02-04 (+7d) | 2027-02-13 → 2027-02-20 (+7d) | -100d → -106d |
| PW | **Potable Water Network** | 2026-11-09 → 2026-11-16 (+7d) | 2027-02-01 → 2027-02-08 (+7d) |  |
| ML | **Main Line Sections** | 2026-11-09 → 2026-11-16 (+7d) | 2027-02-01 → 2027-02-08 (+7d) |  |
| CO-PW-ML-140 | Trench Excavation and Bedding Works for Main Lines of Potable Water Network for Alignment-RD-01 | 2026-11-09 → 2026-11-16 (+7d) | 2026-11-15 → 2026-11-22 (+7d) | -41d → -47d |
| CO-PW-ML-150 | Pipes Laying and accessories for Main Lines of Potable Water Network for Alignment-RD-01 | 2027-01-19 → 2027-01-26 (+7d) | 2027-01-25 → 2027-02-01 (+7d) | -90d → -96d |
| CO-PW-ML-160 | Trench Backfilling and Compaction Works for Main Lines of Potable Water Network for Alignment-RD-01 | 2027-01-26 → 2027-02-02 (+7d) | 2027-02-01 → 2027-02-08 (+7d) | -90d → -96d |
| VC | **Valve Chamber** | 2026-11-11 → 2026-11-18 (+7d) | 2027-02-01 → 2027-02-08 (+7d) |  |
| CO-PW-VC-230 | Excavation Works for Main Line Valves and Valve Chambers of Potable Water Network for Alignment-RD-01 | 2026-11-11 → 2026-11-18 (+7d) | 2026-11-15 → 2026-11-22 (+7d) | -41d → -47d |
| CO-PW-VC190 | Installation of Valve Chambers of Potable Water Network for Alignment-RD-01 | 2026-11-16 → 2026-11-23 (+7d) | 2026-11-19 → 2026-11-26 (+7d) | -35d → -41d |
| CO-PW-VC-240 | Installation Works for Valves of Potable Water Network for Alignment-RD-01 | 2026-11-21 → 2026-11-28 (+7d) | 2026-11-24 → 2026-12-01 (+7d) | -35d → -41d |
| CO-PW-VC-250 | Backfilling Works for Main Line Valves and Valve Chambers of Potable Water Network for Alignment-RD-01 | 2027-01-28 → 2027-02-04 (+7d) | 2027-02-01 → 2027-02-08 (+7d) | -90d → -96d |
| FH | **Fire Hydrant** | 2026-11-16 → 2026-11-23 (+7d) | 2027-02-01 → 2027-02-08 (+7d) |  |
| CO-PW-FH-170 | Excavation Works for Fire Hydrants of Potable Water Network for Alignment-RD-01 | 2026-11-16 → 2026-11-23 (+7d) | 2026-12-02 → 2026-12-09 (+7d) | -41d → -47d |
| CO-PW-FH-180 | Installation Works for Fire Hydrant of Potable Water Network for Alignment-RD-01 | 2027-01-26 → 2027-02-02 (+7d) | 2027-01-28 → 2027-02-04 (+7d) | -87d → -93d |
| CO-PW-FH-190 | Trench Backfilling and Compaction Works for Fire Hydrants of Potable Water Network for Alignment-RD-01 | 2027-01-30 → 2027-02-06 (+7d) | 2027-02-01 → 2027-02-08 (+7d) | -80d → -86d |
| IR | **Irrigation Network** | 2027-02-14 → 2027-02-21 (+7d) | 2027-03-30 → 2027-04-06 (+7d) |  |
| ML | **Main Line Pipes** | 2027-02-14 → 2027-02-21 (+7d) | 2027-03-30 → 2027-04-06 (+7d) |  |
| CO-IR-ML-150 | Trench Excavation and Bedding Works for Main Lines of Irrigation Network for Alignment-RD-01 | 2027-02-14 → 2027-02-21 (+7d) | 2027-02-21 → 2027-02-28 (+7d) | -100d → -106d |
| CO-IR-ML-160 | Pipes Laying Works for Main Lines of Irrigation Network for Alignment-RD-01 | 2027-02-22 → 2027-03-01 (+7d) | 2027-03-02 → 2027-03-13 (+11d) | -100d → -106d |
| CO-IR-ML-170 | Installation Works for Main Line Valves of Irrigation Network for Alignment-RD-01 | 2027-03-03 → 2027-03-14 (+11d) | 2027-03-14 → 2027-03-21 (+7d) | -100d → -106d |
| CO-IR-ML-190 | Installation Works for Bulbblers And Sprinklers and Irrigation Control System of Irrigation Network for Alignment-RD-01 | 2027-03-15 → 2027-03-22 (+7d) | 2027-03-25 → 2027-04-01 (+7d) | -100d → -106d |
| CO-IR-ML-180 | Trench Backfilling and Compaction Works for Main Lines of Irrigation Network for Alignment-RD-01 | 2027-03-27 → 2027-04-03 (+7d) | 2027-03-30 → 2027-04-06 (+7d) | -100d → -106d |
| MV | **Medium Voltage Network** | 2027-02-15 → 2027-02-22 (+7d) | 2027-03-07 → 2027-03-17 (+10d) |  |
| CW | **Cabling Works** | 2027-02-15 → 2027-02-22 (+7d) | 2027-03-07 → 2027-03-17 (+10d) |  |
| CO-MV-ML-280 | Trench Excavation and Bedding Works for Medium Voltage Network for Alignment-RD-01 | 2027-02-15 → 2027-02-22 (+7d) | 2027-02-21 → 2027-02-28 (+7d) | -91d → -97d |
| CO-MV-ML-290 | Duct Laying Works for Medium Voltage Network for Alignment-RD-01 | 2027-02-22 → 2027-03-01 (+7d) | 2027-02-28 → 2027-03-07 (+7d) | -91d → -97d |
| CO-MV-ML-300 | Trench Backfilling and Compaction Works for Medium Voltage Network for Alignment-RD-01 | 2027-03-01 → 2027-03-08 (+7d) | 2027-03-07 → 2027-03-17 (+10d) | -91d → -97d |
| LV | **Low Voltage Network** | 2027-03-23 → 2027-03-30 (+7d) | 2027-04-20 → 2027-04-27 (+7d) |  |
| MLVC | **Main Low Voltage Cables Works ( Cable 300 MM )** | 2027-03-23 → 2027-03-30 (+7d) | 2027-04-12 → 2027-04-19 (+7d) |  |
| CON-LV-ML-130 | Trench Excavation and Bedding Works for Main Cable of Low Voltage Network for Alignment-RD-01 | 2027-03-23 → 2027-03-30 (+7d) | 2027-03-29 → 2027-04-05 (+7d) | -101d → -107d |
| CON-LV-ML-140 | Cable Laying Works for Main Cable of Low Voltage Network for Alignment-RD-01 | 2027-03-30 → 2027-04-06 (+7d) | 2027-04-05 → 2027-04-12 (+7d) | -101d → -107d |
| CON-LV-ML-150 | Trench Backfilling and Compaction Works for Main Cable of Low Voltage Network for Alignment-RD-01 | 2027-04-06 → 2027-04-13 (+7d) | 2027-04-12 → 2027-04-19 (+7d) | -98d → -104d |
| SLVC | **Service Low Voltage Cables Works ( Cable 70 MM )** | 2027-03-30 → 2027-04-06 (+7d) | 2027-04-20 → 2027-04-27 (+7d) |  |
| CON-LV-HC-130 | Trench Excavation and Bedding Works for Service Cable of Low Voltage Network for Alignment-RD-01 | 2027-03-30 → 2027-04-06 (+7d) | 2027-04-05 → 2027-04-12 (+7d) | -99d → -105d |
| CON-LV-HC-140 | Cable Laying Works for Service Cable of Low Voltage Network for Alignment-RD-01 | 2027-04-06 → 2027-04-13 (+7d) | 2027-04-13 → 2027-04-20 (+7d) | -99d → -105d |
| CON-LV-HC-150 | Trench Backfilling and Compaction Works for Service Cable of Low Voltage Network for Alignment-RD-01 | 2027-04-14 → 2027-04-21 (+7d) | 2027-04-20 → 2027-04-27 (+7d) | -99d → -105d |
| DP | **Distribution Pillars Works** | 2027-03-30 → 2027-04-06 (+7d) | 2027-04-06 → 2027-04-13 (+7d) |  |
| CON-LV-DP-130 | Foundation Excavation Works for Distribution Pillars of Low Voltage Network for Alignment-RD-01 | 2027-03-30 → 2027-04-06 (+7d) | 2027-04-06 → 2027-04-13 (+7d) | -89d → -95d |
| SL | **Street Lighting Network** | 2027-02-22 → 2027-03-01 (+7d) | 2027-04-11 → 2027-04-18 (+7d) |  |

| ID | Task | Start | Finish | Total float |
| --- | --- | --- | --- | --- |
| LP | **Lighting Poles Works** | 2027-02-22 → 2027-03-01 (+7d) | 2027-03-24 → 2027-03-31 (+7d) |  |
| CO-SL-LP-350 | Installation Works for Lighting Poles Foundation of Street Lighting Network for Alignment-RD-01 | 2027-02-22 → 2027-03-01 (+7d) | 2027-03-02 → 2027-03-13 (+11d) | -84d → -90d |
| CO-SL-LP-360 | Installation Works for Lighting Poles of Street Lighting Network for Alignment-RD-01 | 2027-03-13 → 2027-03-20 (+7d) | 2027-03-17 → 2027-03-24 (+7d) | -89d → -95d |
| CO-SL-LP-380 | Backfilling Works for Lighting Poles of Street Lighting Network for Alignment-RD-01 | 2027-03-18 → 2027-03-25 (+7d) | 2027-03-24 → 2027-03-31 (+7d) | -85d → -91d |
| CW | **Cabling Works** | 2027-03-31 → 2027-04-07 (+7d) | 2027-04-11 → 2027-04-18 (+7d) |  |
| CO-SL-CL-290 | Cable Laying Works for Street Lighting Network for Alignment-RD-01 | 2027-03-31 → 2027-04-07 (+7d) | 2027-04-05 → 2027-04-12 (+7d) | -100d → -106d |
| CO-SL-CL-300 | Trench Backfilling and Compaction Works for Street Lighting Network for Alignment-RD-01 | 2027-04-06 → 2027-04-13 (+7d) | 2027-04-11 → 2027-04-18 (+7d) | -100d → -106d |
| TE | **Telecom and Light Current Network** | 2027-04-12 → 2027-04-19 (+7d) | 2027-04-29 → 2027-05-06 (+7d) |  |
| PD | **Ducts Works** | 2027-04-21 → 2027-04-28 (+7d) | 2027-04-28 → 2027-05-05 (+7d) |  |
| CO-TE-DW-150 | Pipes Laying Works for Ducts of Telecom Network for Alignment-RD-01 | 2027-04-21 → 2027-04-28 (+7d) | 2027-04-25 → 2027-05-02 (+7d) | -99d → -105d |
| CO-TE-DW-160 | Trench Backfilling and Compaction Works for Ducts of Telecom Network for Alignment-RD-01 | 2027-04-26 → 2027-05-03 (+7d) | 2027-04-28 → 2027-05-05 (+7d) | -99d → -105d |
| MH | **Manholes Works** | 2027-04-12 → 2027-04-19 (+7d) | 2027-04-20 → 2027-04-27 (+7d) |  |
| CO-TE-MH-170 | Excavation Works for Manholes of Telecom Network for Alignment-RD-01 | 2027-04-12 → 2027-04-19 (+7d) | 2027-04-15 → 2027-04-22 (+7d) | -92d → -98d |
| CO-TE-MH-180 | Installation Works for Manholes of Telecom Network for Alignment-RD-01 | 2027-04-12 → 2027-04-19 (+7d) | 2027-04-15 → 2027-04-22 (+7d) | -92d → -98d |
| CO-TE-MH-190 | Backfilling Works for Manholes of Telecom Network for Alignment-RD-01 | 2027-04-17 → 2027-04-24 (+7d) | 2027-04-20 → 2027-04-27 (+7d) | -92d → -98d |
| DD | **CCTV, Telephone, MSN, ACs System Works** | 2027-04-21 → 2027-04-28 (+7d) | 2027-04-29 → 2027-05-06 (+7d) |  |
| CO-TE-CTV-150 | Installation of CCTV, Telephone, ACS and MSN Systems Cables for Alignment-RD-01 | 2027-04-21 → 2027-04-28 (+7d) | 2027-04-29 → 2027-05-06 (+7d) | -81d → -87d |
| RD | **Road Network** | 2027-04-29 → 2027-05-06 (+7d) | 2027-05-25 → 2027-06-01 (+7d) |  |
| LS | **Pavement Works** | 2027-04-29 → 2027-05-06 (+7d) | 2027-05-10 → 2027-05-23 (+13d) |  |
| CO-RD-PV-180 | Fixing of Curbstone for Sidewalks Pavement for Alignment-RD-01 | 2027-04-29 → 2027-05-06 (+7d) | 2027-05-10 → 2027-05-23 (+13d) | -95d → -101d |
| CO-RD-PV-190 | Fixing of Interlock Tiles for Sidewalks Pavement for Alignment-RD-01 | 2027-04-29 → 2027-05-06 (+7d) | 2027-05-10 → 2027-05-23 (+13d) | -87d → -93d |
| TS | **Traffic Signs Boards and Roads Marking** | 2027-05-03 → 2027-05-10 (+7d) | 2027-05-25 → 2027-06-01 (+7d) |  |
| CO-RD-F-RM-190 | Application of Road Marking Works For Road Works for Alignment-RD-01 | 2027-05-03 → 2027-05-10 (+7d) | 2027-05-06 → 2027-05-13 (+7d) | -78d → -84d |
| CO-RD-F-TS-130 | Installation Works of Traffic Signs Boards For Road Works for Alignment-RD-01 | 2027-05-22 → 2027-05-29 (+7d) | 2027-05-25 → 2027-06-01 (+7d) | -85d → -91d |
| 3 | **Finishes for Infrastructure Networks** | 2027-03-08 → 2027-03-18 (+10d) | 2027-06-14 → 2027-06-21 (+7d) |  |
| 11 | **Storm Drainage Network** | 2027-04-29 → 2027-05-06 (+7d) | 2027-06-14 → 2027-06-21 (+7d) |  |
| TF | **Testing and Finishes** | 2027-04-29 → 2027-05-06 (+7d) | 2027-06-14 → 2027-06-21 (+7d) |  |
| CO-SD-CB-TF-190 | Catch Basin Internal Finishes (Benching ) for Storm Drainage Network for Alignment-RD-01 | 2027-04-29 → 2027-05-06 (+7d) | 2027-05-05 → 2027-05-12 (+7d) | -99d → -105d |
| CO-SD-ML-TF-110 | Testing Work for Pipes of Storm Drainage Network for Alignment-RD-01 | 2027-05-26 → 2027-06-02 (+7d) | 2027-05-27 → 2027-06-03 (+7d) | -111d → -117d |
| CO-SD-MH-TF-230 | Testing Works for Manholes of Storm Drainage Network for Alignment-RD-01 | 2027-05-29 → 2027-06-05 (+7d) | 2027-05-30 → 2027-06-06 (+7d) | -111d → -117d |
| CO-SD-CB-TF-170 | Testing Works for Catch Basins of Storm Drainage Network for Alignment-RD-01 | 2027-05-31 → 2027-06-07 (+7d) | 2027-06-07 → 2027-06-14 (+7d) | -111d → -117d |
| CO-SD-CB-TF-180 | Install Catch Basin Cover Works for External Finishes of Storm Drainage Network for Alignment-RD-01 | 2027-06-08 → 2027-06-15 (+7d) | 2027-06-14 → 2027-06-21 (+7d) | -98d → -104d |
| 10 | **Sewage Network** | 2027-04-29 → 2027-05-06 (+7d) | 2027-05-06 → 2027-05-13 (+7d) |  |
| TF | **Testing and Finishes** | 2027-04-29 → 2027-05-06 (+7d) | 2027-05-06 → 2027-05-13 (+7d) |  |
| CO-SW-TF-250 | Testing Works for Main Line Manholes of Sewage Network for Alignment-RD-01 | 2027-04-29 → 2027-05-06 (+7d) | 2027-05-02 → 2027-05-09 (+7d) | -80d → -86d |
| CO-SW-TF-230 | Final Testing For Main Line of Sewage Network for Alignment-RD-01 | 2027-05-03 → 2027-05-10 (+7d) | 2027-05-06 → 2027-05-13 (+7d) | -80d → -86d |
| 9 | **Potable Water Network** | 2027-04-29 → 2027-05-06 (+7d) | 2027-05-08 → 2027-05-20 (+12d) |  |
| TF | **Testing and Finishes** | 2027-04-29 → 2027-05-06 (+7d) | 2027-05-08 → 2027-05-20 (+12d) |  |
| CO-PW-TF-140 | Fire Hydrant Finishies (S.Box + Safety + Marker Post ) of Potable Water Network for Alignment-RD-01 | 2027-04-29 → 2027-05-06 (+7d) | 2027-05-03 → 2027-05-10 (+7d) | -83d → -89d |
| CO-PW-TF-150 | Final Finishes works and Covers for Valves and Valve Chambers for Alignment-RD-01 | 2027-05-04 → 2027-05-11 (+7d) | 2027-05-05 → 2027-05-12 (+7d) | -83d → -89d |
| CO-PW-TF-220 | Testing of Potable Water Network for Alignment-RD-01 | 2027-05-06 → 2027-05-13 (+7d) | 2027-05-08 → 2027-05-20 (+12d) | -83d → -89d |
| 13 | **Irrigation Network** | 2027-05-09 → 2027-05-22 (+13d) | 2027-05-10 → 2027-05-23 (+13d) |  |
| TF | **Testing and Finishes** | 2027-05-09 → 2027-05-22 (+13d) | 2027-05-10 → 2027-05-23 (+13d) |  |
| CO-IR-TF-170 | Final Testing (pressure tests) of Irrigation Network for Alignment-RD-01 | 2027-05-09 → 2027-05-22 (+13d) | 2027-05-10 → 2027-05-23 (+13d) | -83d → -89d |
| 1 | **Treated Sewage Effluent (Tse)** | 2027-05-09 → 2027-05-22 (+13d) | 2027-05-10 → 2027-05-23 (+13d) |  |
| TF | **Testing and Finishes** | 2027-05-09 → 2027-05-22 (+13d) | 2027-05-10 → 2027-05-23 (+13d) |  |
| CO-TSE-TF-210 | Final Testing (pressure tests) of Treated Sewage Effluent (Tse) for Alignment-RD-01 | 2027-05-09 → 2027-05-22 (+13d) | 2027-05-10 → 2027-05-23 (+13d) | -73d → -79d |
| 14 | **Medium Voltage Network** | 2027-03-08 → 2027-03-18 (+10d) | 2027-03-13 → 2027-03-20 (+7d) |  |
| TT | **Termination and Testing Works** | 2027-03-08 → 2027-03-18 (+10d) | 2027-03-13 → 2027-03-20 (+7d) |  |
| CO-MV-TF-230 | Testing and Termination Works of Medium Voltage Network for Alignment-RD-01 | 2027-03-08 → 2027-03-18 (+10d) | 2027-03-13 → 2027-03-20 (+7d) | -50d → -56d |
| 6 | **Low Voltage Network** | 2027-04-21 → 2027-04-28 (+7d) | 2027-04-25 → 2027-05-02 (+7d) |  |
| TT | **Termination and Testing Works** | 2027-04-21 → 2027-04-28 (+7d) | 2027-04-25 → 2027-05-02 (+7d) |  |
| CON-LV-TT-120 | Testing and Termination Works for Substation Low Voltage Panel Boards of Low Voltage Network for Alignment-RD-01 | 2027-04-21 → 2027-04-28 (+7d) | 2027-04-25 → 2027-05-02 (+7d) | -67d → -73d |
| 12 | **Street Lighting Network** | 2027-04-12 → 2027-04-19 (+7d) | 2027-05-12 → 2027-05-25 (+13d) |  |
| TR | **Termination and Testing Works** | 2027-04-12 → 2027-04-19 (+7d) | 2027-05-12 → 2027-05-25 (+13d) |  |
| CO-SL-LP-370 | Installation Works for Lighting Fixtures With Drop Wire of Street Lighting Network for Alignment-RD-01 | 2027-04-12 → 2027-04-19 (+7d) | 2027-04-18 → 2027-04-25 (+7d) | -100d → -106d |
| CO-SL-TF-410 | Testing Works for Lighting Poles of Street Lighting Network for Alignment-RD-01 | 2027-05-10 → 2027-05-23 (+13d) | 2027-05-12 → 2027-05-25 (+13d) | -81d → -87d |
| ES | **Earthing System Works** | 2027-05-04 → 2027-05-11 (+7d) | 2027-05-09 → 2027-05-22 (+13d) |  |
| CO-SL-ES-240 | Install Earthing System Works for Lighting Poles of Street Lighting Network for Alignment-RD-01 | 2027-05-04 → 2027-05-11 (+7d) | 2027-05-06 → 2027-05-13 (+7d) | -87d → -93d |
| CO-SL-ES-250 | Install Earthing System Works for Lighting Panel Boards of Street Lighting Network for Alignment-RD-01 | 2027-05-08 → 2027-05-20 (+12d) | 2027-05-09 → 2027-05-22 (+13d) | -86d → -92d |
| 3 | **Telecom and Light Current Network** | 2027-04-29 → 2027-05-06 (+7d) | 2027-05-05 → 2027-05-12 (+7d) |  |
| 1 | **Testing and Finishes** | 2027-04-29 → 2027-05-06 (+7d) | 2027-05-05 → 2027-05-12 (+7d) |  |
| CO-TE-CTV-TF-180 | Testing and Interface modules with Telecom for Alignment-RD-01 | 2027-04-29 → 2027-05-06 (+7d) | 2027-05-02 → 2027-05-09 (+7d) | -83d → -89d |
| CO-TE-CTV-TF-310 | Testing and Interface modules with CCTV, Telephone, MSN and Access Control for Alignment-RD-01 | 2027-05-03 → 2027-05-10 (+7d) | 2027-05-05 → 2027-05-12 (+7d) | -83d → -89d |
| 5 | **Alignment-RD-02** | 2026-12-06 → 2026-12-13 (+7d) | 2027-07-05 → 2027-07-12 (+7d) |  |
| EW | **Earthworks** | 2026-12-06 → 2026-12-13 (+7d) | 2026-12-19 → 2026-12-26 (+7d) |  |
| EW | **Earthworks** | 2026-12-06 → 2026-12-13 (+7d) | 2026-12-19 → 2026-12-26 (+7d) |  |
| CO-EW-220 | Excavation and Backfilling Works Upto Design Level for Earthworks for Alignment-RD-02 | 2026-12-06 → 2026-12-13 (+7d) | 2026-12-19 → 2026-12-26 (+7d) | -115d → -121d |
| SD | **Storm Drainage Network** | 2026-12-20 → 2026-12-27 (+7d) | 2027-04-10 → 2027-04-17 (+7d) |  |
| MH | **Manholes** | 2026-12-20 → 2026-12-27 (+7d) | 2027-01-03 → 2027-01-10 (+7d) |  |

| ID | Task | Start | Finish | Total float |
| --- | --- | --- | --- | --- |
| CO-SD-MH-270 | Trench Excavation and Bedding Works for Manholes of Storm Drainage Network for Alignment-RD-02 | 2026-12-20 → 2026-12-27 (+7d) | 2026-12-23 → 2026-12-30 (+7d) | -115d → -121d |
| CO-SD-MH-280 | Install RC Footing Works for Manholes of Storm Drainage Network for Alignment-RD-02 | 2026-12-24 → 2026-12-31 (+7d) | 2026-12-27 → 2027-01-03 (+7d) | -115d → -121d |
| CO-SD-MH-290 | Install RC Wall Rings & Slab Works for Manholes of Storm Drainage Network for Alignment-RD-02 | 2026-12-28 → 2027-01-04 (+7d) | 2026-12-30 → 2027-01-06 (+7d) | -115d → -121d |
| CO-SD-MH-300 | Backfilling Works for Manholes of Storm Drainage Network for Alignment-RD-02 | 2026-12-31 → 2027-01-07 (+7d) | 2027-01-03 → 2027-01-10 (+7d) | -109d → -115d |
| ML | **Main Line Sections** | 2026-12-31 → 2027-01-07 (+7d) | 2027-01-10 → 2027-01-17 (+7d) |  |
| CO-SD-ML-170 | Trench Excavation and Bedding Works for Main Lines of Storm Drainage Network for Alignment-RD-02 | 2026-12-31 → 2027-01-07 (+7d) | 2027-01-03 → 2027-01-10 (+7d) | -115d → -121d |
| CO-SD-ML-180 | Pipes Laying Works for Main Lines of Storm Drainage Network for Alignment-RD-02 | 2027-01-04 → 2027-01-11 (+7d) | 2027-01-06 → 2027-01-13 (+7d) | -115d → -121d |
| CO-SD-ML-190 | Trench Backfilling and Compaction Works for Main Lines of Storm Drainage Network for Alignment-RD-02 | 2027-01-07 → 2027-01-14 (+7d) | 2027-01-10 → 2027-01-17 (+7d) | -115d → -121d |
| CB | **Catch Basin Sections** | 2027-01-11 → 2027-01-18 (+7d) | 2027-04-10 → 2027-04-17 (+7d) |  |
| CO-SD-CB-210 | Trench Excavation and Bedding Works for Catch Basins of Storm Drainage Network for Alignment-RD-02 | 2027-01-11 → 2027-01-18 (+7d) | 2027-01-31 → 2027-02-07 (+7d) | -84d → -90d |
| CO-SD-CB-220 | Installation and Pipes Laying Connection Works for Catch Basins of Storm Drainage Network for Alignment-RD-02 | 2027-02-01 → 2027-02-08 (+7d) | 2027-02-22 → 2027-03-01 (+7d) | -84d → -90d |
| CO-SD-CB-230 | Trench Backfilling and Compaction Works for Catch Basins of Storm Drainage Network for Alignment-RD-02 | 2027-04-05 → 2027-04-12 (+7d) | 2027-04-10 → 2027-04-17 (+7d) | -116d → -122d |
| SW | **Sewage Network** | 2027-01-11 → 2027-01-18 (+7d) | 2027-03-22 → 2027-03-29 (+7d) |  |
| 1 | **Manholes** | 2027-01-11 → 2027-01-18 (+7d) | 2027-03-22 → 2027-03-29 (+7d) |  |
| CO-SW-MH-260 | Excavation Works for Main Line Manholes of Sewage Network for Alignment-RD-02 | 2027-01-11 → 2027-01-18 (+7d) | 2027-01-23 → 2027-01-30 (+7d) | -115d → -121d |
| CO-SW-MH-270 | Installation RC Footing Works for Main Line Manholes of Sewage Network for Alignment-RD-02 | 2027-01-24 → 2027-01-31 (+7d) | 2027-02-04 → 2027-02-11 (+7d) | -115d → -121d |
| CO-SW-MH-280 | Install Grp Liner Wall Works for Main Line Manholes of Sewage Network for Alignment-RD-02 | 2027-02-06 → 2027-02-13 (+7d) | 2027-02-18 → 2027-02-25 (+7d) | -115d → -121d |
| CO-SW-MH-290 | Pouring Grp Liner Wall Works for Main Line Manholes of Sewage Network for Alignment-RD-02 | 2027-02-20 → 2027-02-27 (+7d) | 2027-03-04 → 2027-03-15 (+11d) | -115d → -121d |
| CO-SW-MH-300 | Backfilling Works for Main Line Manholes of Sewage Network for Alignment-RD-02 | 2027-03-06 → 2027-03-16 (+10d) | 2027-03-22 → 2027-03-29 (+7d) | -115d → -121d |
| ML | **Main Line Sections** | 2027-01-11 → 2027-01-18 (+7d) | 2027-03-22 → 2027-03-29 (+7d) |  |
| CO-SW-ML-170 | Trench Excavation and Bedding Works for Main Lines of Sewage Network for Alignment-RD-02 | 2027-01-11 → 2027-01-18 (+7d) | 2027-01-23 → 2027-01-30 (+7d) | -76d → -82d |
| CO-SW-ML-180 | Pipes Laying Works for Main Lines of Sewage Network for Alignment-RD-02 | 2027-01-24 → 2027-01-31 (+7d) | 2027-02-04 → 2027-02-11 (+7d) | -76d → -82d |
| CO-SW-ML-190 | Trench Backfilling and Compaction Works for Main Lines of Sewage Network for Alignment-RD-02 | 2027-03-07 → 2027-03-17 (+10d) | 2027-03-22 → 2027-03-29 (+7d) | -101d → -107d |
| TSE | **Treated Sewage Effluent (Tse)** | 2027-01-11 → 2027-01-18 (+7d) | 2027-02-27 → 2027-03-06 (+7d) |  |
| CO-TSE-ML-250 | Trench Excavation and Bedding Works for Main Lines of Treated Sewage Effluent (Tse) for Alignment-RD-02 | 2027-01-11 → 2027-01-18 (+7d) | 2027-01-24 → 2027-01-31 (+7d) | -101d → -107d |
| CO-TSE-ML-260 | Pipes Laying Works for Main Lines of Treated Sewage Effluent (Tse) for Alignment-RD-02 | 2027-01-25 → 2027-02-01 (+7d) | 2027-02-13 → 2027-02-20 (+7d) | -101d → -107d |
| CO-TSE-ML-280 | Trench Backfilling and Compaction Works for Treated Sewage Effluent (Tse) for Alignment-RD-02 | 2027-02-14 → 2027-02-21 (+7d) | 2027-02-27 → 2027-03-06 (+7d) | -101d → -107d |
| PW | **Potable Water Network** | 2027-02-28 → 2027-03-07 (+7d) | 2027-03-23 → 2027-03-30 (+7d) |  |
| ML | **Main Line Sections** | 2027-02-28 → 2027-03-07 (+7d) | 2027-03-22 → 2027-03-29 (+7d) |  |
| CO-PW-ML-170 | Trench Excavation and Bedding Works for Main Lines of Potable Water Network for Alignment-RD-02 | 2027-02-28 → 2027-03-07 (+7d) | 2027-03-04 → 2027-03-15 (+11d) | -101d → -107d |
| CO-PW-ML-180 | Pipes Laying and accessories for Main Lines of Potable Water Network for Alignment-RD-02 | 2027-03-06 → 2027-03-16 (+10d) | 2027-03-16 → 2027-03-23 (+7d) | -101d → -107d |
| CO-PW-ML-190 | Trench Backfilling and Compaction Works for Main Lines of Potable Water Network for Alignment-RD-02 | 2027-03-17 → 2027-03-24 (+7d) | 2027-03-22 → 2027-03-29 (+7d) | -100d → -106d |
| VC | **Valve Chamber** | 2027-02-28 → 2027-03-07 (+7d) | 2027-03-23 → 2027-03-30 (+7d) |  |
| CO-PW-VC-260 | Excavation Works for Main Line Valves and Valve Chambers of Potable Water Network for Alignment-RD-02 | 2027-02-28 → 2027-03-07 (+7d) | 2027-03-04 → 2027-03-15 (+11d) | -101d → -107d |
| CO-PW-VC200 | Installation of Valve Chambers of Potable Water Network for Alignment-RD-02 | 2027-03-06 → 2027-03-16 (+10d) | 2027-03-08 → 2027-03-18 (+10d) | -101d → -107d |
| CO-PW-VC-270 | Installation Works for Valves of Potable Water Network for Alignment-RD-02 | 2027-03-13 → 2027-03-20 (+7d) | 2027-03-17 → 2027-03-24 (+7d) | -101d → -107d |
| CO-PW-VC-280 | Backfilling Works for Main Line Valves and Valve Chambers of Potable Water Network for Alignment-RD-02 | 2027-03-18 → 2027-03-25 (+7d) | 2027-03-23 → 2027-03-30 (+7d) | -101d → -107d |
| FH | **Fire Hydrant** | 2027-03-06 → 2027-03-16 (+10d) | 2027-03-23 → 2027-03-30 (+7d) |  |
| CO-PW-FH-200 | Excavation Works for Fire Hydrants of Potable Water Network for Alignment-RD-02 | 2027-03-06 → 2027-03-16 (+10d) | 2027-03-08 → 2027-03-18 (+10d) | -97d → -103d |
| CO-PW-FH-210 | Installation Works for Fire Hydrant of Potable Water Network for Alignment-RD-02 | 2027-03-17 → 2027-03-24 (+7d) | 2027-03-20 → 2027-03-27 (+7d) | -101d → -107d |
| CO-PW-FH-220 | Trench Backfilling and Compaction Works for Fire Hydrants of Potable Water Network for Alignment-RD-02 | 2027-03-21 → 2027-03-28 (+7d) | 2027-03-23 → 2027-03-30 (+7d) | -101d → -107d |
| IR | **Irrigation Network** | 2027-03-07 → 2027-03-17 (+10d) | 2027-03-30 → 2027-04-06 (+7d) |  |
| ML | **Main Line Pipes** | 2027-03-07 → 2027-03-17 (+10d) | 2027-03-30 → 2027-04-06 (+7d) |  |
| CO-IR-ML-200 | Trench Excavation and Bedding Works for Main Lines of Irrigation Network for Alignment-RD-02 | 2027-03-07 → 2027-03-17 (+10d) | 2027-03-13 → 2027-03-20 (+7d) | -87d → -93d |
| CO-IR-ML-210 | Pipes Laying Works for Main Lines of Irrigation Network for Alignment-RD-02 | 2027-03-17 → 2027-03-24 (+7d) | 2027-03-20 → 2027-03-27 (+7d) | -90d → -96d |
| CO-IR-ML-220 | Installation Works for Main Line Valves of Irrigation Network for Alignment-RD-02 | 2027-03-21 → 2027-03-28 (+7d) | 2027-03-23 → 2027-03-30 (+7d) | -90d → -96d |
| CO-IR-ML-240 | Installation Works for Bulbblers And Sprinkler and Irrigation Control System of Irrigation Network for Alignment-RD-02 | 2027-03-24 → 2027-03-31 (+7d) | 2027-03-27 → 2027-04-03 (+7d) | -90d → -96d |
| CO-IR-ML-230 | Trench Backfilling and Compaction Works for Main Lines of Irrigation Network for Alignment-RD-02 | 2027-03-28 → 2027-04-04 (+7d) | 2027-03-30 → 2027-04-06 (+7d) | -90d → -96d |
| MV | **Medium Voltage Network** | 2027-04-11 → 2027-04-18 (+7d) | 2027-04-24 → 2027-05-01 (+7d) |  |
| CW | **Cabling Works** | 2027-04-11 → 2027-04-18 (+7d) | 2027-04-24 → 2027-05-01 (+7d) |  |
| CO-MV-ML-310 | Trench Excavation and Bedding Works for Medium Voltage Network for Alignment-RD-02 | 2027-04-11 → 2027-04-18 (+7d) | 2027-04-14 → 2027-04-21 (+7d) | -116d → -122d |
| CO-MV-ML-320 | Duct Laying Works for Medium Voltage Network for Alignment-RD-02 | 2027-04-15 → 2027-04-22 (+7d) | 2027-04-19 → 2027-04-26 (+7d) | -116d → -122d |
| CO-MV-ML-330 | Trench Backfilling and Compaction Works for Medium Voltage Network for Alignment-RD-02 | 2027-04-20 → 2027-04-27 (+7d) | 2027-04-24 → 2027-05-01 (+7d) | -116d → -122d |
| LV | **Low Voltage Network** | 2027-03-31 → 2027-04-07 (+7d) | 2027-05-22 → 2027-05-29 (+7d) |  |
| MLVC | **Main Low Voltage Cables Works ( Cable 300 MM )** | 2027-03-31 → 2027-04-07 (+7d) | 2027-05-10 → 2027-05-23 (+13d) |  |
| CON-LV-ML-170 | Cable Laying Works for Main Cable of Low Voltage Network for Alignment-RD-02 | 2027-03-31 → 2027-04-07 (+7d) | 2027-04-13 → 2027-04-20 (+7d) | -90d → -96d |
| CON-LV-ML-160 | Trench Excavation and Bedding Works for Main Cable of Low Voltage Network for Alignment-RD-02 | 2027-04-25 → 2027-05-02 (+7d) | 2027-04-29 → 2027-05-06 (+7d) | -116d → -122d |
| CON-LV-ML-180 | Trench Backfilling and Compaction Works for Main Cable of Low Voltage Network for Alignment-RD-02 | 2027-05-01 → 2027-05-08 (+7d) | 2027-05-10 → 2027-05-23 (+13d) | -107d → -113d |
| SLVC | **Service Low Voltage Cables Works ( Cable 70 MM )** | 2027-05-01 → 2027-05-08 (+7d) | 2027-05-22 → 2027-05-29 (+7d) |  |
| CON-LV-HC-160 | Trench Excavation and Bedding Works for Service Cable of Low Voltage Network for Alignment-RD-02 | 2027-05-01 → 2027-05-08 (+7d) | 2027-05-04 → 2027-05-11 (+7d) | -108d → -114d |
| CON-LV-HC-170 | Cable Laying Works for Service Cable of Low Voltage Network for Alignment-RD-02 | 2027-05-05 → 2027-05-12 (+7d) | 2027-05-11 → 2027-05-24 (+13d) | -108d → -114d |
| CON-LV-HC-180 | Trench Backfilling and Compaction Works for Service Cable of Low Voltage Network for Alignment-RD-02 | 2027-05-12 → 2027-05-25 (+13d) | 2027-05-22 → 2027-05-29 (+7d) | -108d → -114d |
| DP | **Distribution Pillars Works** | 2027-04-25 → 2027-05-02 (+7d) | 2027-05-10 → 2027-05-23 (+13d) |  |
| CON-LV-DP-160 | Foundation Excavation Works for Distribution Pillars of Low Voltage Network for Alignment-RD-02 | 2027-04-25 → 2027-05-02 (+7d) | 2027-05-01 → 2027-05-08 (+7d) | -116d → -122d |
| CON-LV-DP-170 | Pouring Plain Concrete For Distribution Pillar Units of Low Voltage Network for Alignment-RD-02 | 2027-05-02 → 2027-05-09 (+7d) | 2027-05-05 → 2027-05-12 (+7d) | -96d → -102d |
| CON-LV-DP-180 | Installation Works for Distribution Pillar Units of Low Voltage Network for Alignment-RD-02 | 2027-05-06 → 2027-05-13 (+7d) | 2027-05-10 → 2027-05-23 (+13d) | -96d → -102d |
| SL | **Street Lighting Network** | 2027-05-02 → 2027-05-09 (+7d) | 2027-05-31 → 2027-06-07 (+7d) |  |
| LP | **Lighting Poles Works** | 2027-05-02 → 2027-05-09 (+7d) | 2027-05-13 → 2027-05-26 (+13d) |  |
| CO-SL-LP-400 | Installation Works for Lighting Poles Foundation of Street Lighting Network for Alignment-RD-02 | 2027-05-02 → 2027-05-09 (+7d) | 2027-05-05 → 2027-05-12 (+7d) | -116d → -122d |
| CO-SL-LP-410 | Installation Works for Lighting Poles of Street Lighting Network for Alignment-RD-02 | 2027-05-06 → 2027-05-13 (+7d) | 2027-05-10 → 2027-05-23 (+13d) | -116d → -122d |

| ID | Task | Start | Finish | Total float |
| --- | --- | --- | --- | --- |
| CO-SL-LP-430 | Backfilling Works for Lighting Poles of Street Lighting Network for Alignment-RD-02 | 2027-05-11 → 2027-05-24 (+13d) | 2027-05-13 → 2027-05-26 (+13d) | -116d → -122d |
| CW | **Cabling Works** | 2027-05-02 → 2027-05-09 (+7d) | 2027-05-09 → 2027-05-22 (+13d) |  |
| CO-SL-CL-320 | Cable Laying Works for Street Lighting Network for Alignment-RD-02 | 2027-05-02 → 2027-05-09 (+7d) | 2027-05-05 → 2027-05-12 (+7d) | -112d → -118d |
| CO-SL-CL-330 | Trench Backfilling and Compaction Works for Street Lighting Network for Alignment-RD-02 | 2027-05-06 → 2027-05-13 (+7d) | 2027-05-09 → 2027-05-22 (+13d) | -112d → -118d |
| DPB | **Distrubution Panel Boards** | 2027-05-20 → 2027-05-27 (+7d) | 2027-05-31 → 2027-06-07 (+7d) |  |
| CO-SL-DB-330 | Installation Works for Panel Board Concrete Foundations of Street Lighting Network for Alignment-RD-02 | 2027-05-20 → 2027-05-27 (+7d) | 2027-05-23 → 2027-05-30 (+7d) | -116d → -122d |
| CO-SL-DB-340 | Installation Works for Lighting Panel Boards of Street Lighting Network for Alignment-RD-02 | 2027-05-24 → 2027-05-31 (+7d) | 2027-05-31 → 2027-06-07 (+7d) | -116d → -122d |
| TE | **Telecom and Light Current Network** | 2027-04-25 → 2027-05-02 (+7d) | 2027-06-12 → 2027-06-19 (+7d) |  |
| PD | **Ducts Works** | 2027-06-01 → 2027-06-08 (+7d) | 2027-06-12 → 2027-06-19 (+7d) |  |
| CO-TE-DW-190 | Pipes Laying Works for Ducts of Telecom Network for Alignment-RD-02 | 2027-06-01 → 2027-06-08 (+7d) | 2027-06-06 → 2027-06-13 (+7d) | -116d → -122d |
| CO-TE-DW-200 | Trench Backfilling and Compaction Works for Ducts of Telecom Network for Alignment-RD-02 | 2027-06-07 → 2027-06-14 (+7d) | 2027-06-12 → 2027-06-19 (+7d) | -116d → -122d |
| MH | **Manholes Works** | 2027-04-25 → 2027-05-02 (+7d) | 2027-05-04 → 2027-05-11 (+7d) |  |
| CO-TE-MH-200 | Excavation Works for Manholes of Telecom Network for Alignment-RD-02 | 2027-04-25 → 2027-05-02 (+7d) | 2027-04-27 → 2027-05-04 (+7d) | -91d → -97d |
| CO-TE-MH-210 | Installation Works for Manholes of Telecom Network for Alignment-RD-02 | 2027-04-28 → 2027-05-05 (+7d) | 2027-05-01 → 2027-05-08 (+7d) | -91d → -97d |
| CO-TE-MH-220 | Backfilling Works for Manholes of Telecom Network for Alignment-RD-02 | 2027-05-02 → 2027-05-09 (+7d) | 2027-05-04 → 2027-05-11 (+7d) | -91d → -97d |
| DD | **CCTV, Telephone, MSN, ACs System Works** | 2027-05-05 → 2027-05-12 (+7d) | 2027-05-11 → 2027-05-24 (+13d) |  |
| CO-TE-CTV-180 | Installation of CCTV, Telephone, ACS and MSN Systems Cables for Alignment-RD-02 | 2027-05-05 → 2027-05-12 (+7d) | 2027-05-11 → 2027-05-24 (+13d) | -80d → -86d |
| RD | **Road Works** | 2027-05-23 → 2027-05-30 (+7d) | 2027-06-21 → 2027-06-28 (+7d) |  |
| LS | **Pavement Works** | 2027-05-23 → 2027-05-30 (+7d) | 2027-06-07 → 2027-06-14 (+7d) |  |
| CO-RD-PV-200 | Fixing of Curbstone for Sidewalks Pavement for Alignment-RD-02 | 2027-05-23 → 2027-05-30 (+7d) | 2027-05-27 → 2027-06-03 (+7d) | -101d → -107d |
| CO-RD-PV-210 | Fixing of Interlock Tiles for Sidewalks Pavement for Alignment-RD-02 | 2027-05-29 → 2027-06-05 (+7d) | 2027-06-07 → 2027-06-14 (+7d) | -101d → -107d |
| TS | **Traffic Signs Boards and Roads Marking** | 2027-06-13 → 2027-06-20 (+7d) | 2027-06-21 → 2027-06-28 (+7d) |  |
| CO-RD-F-RM-200 | Application of Road Marking Works For Road Works for Alignment-RD-02 | 2027-06-13 → 2027-06-20 (+7d) | 2027-06-16 → 2027-06-23 (+7d) | -105d → -111d |
| CO-RD-F-TS-140 | Installation Works of Traffic Signs Boards For Road Works for Alignment-RD-02 | 2027-06-17 → 2027-06-24 (+7d) | 2027-06-21 → 2027-06-28 (+7d) | -105d → -111d |
| 3 | **Finishes for Infrastructure Networks** | 2027-04-25 → 2027-05-02 (+7d) | 2027-07-05 → 2027-07-12 (+7d) |  |
| 11 | **Storm Drainage Network** | 2027-06-01 → 2027-06-08 (+7d) | 2027-07-05 → 2027-07-12 (+7d) |  |
| TF | **Testing and Finishes** | 2027-06-01 → 2027-06-08 (+7d) | 2027-07-05 → 2027-07-12 (+7d) |  |
| CO-SD-ML-TF-120 | Testing Work for Pipes of Storm Drainage Network for Alignment-RD-02 | 2027-06-01 → 2027-06-08 (+7d) | 2027-06-07 → 2027-06-14 (+7d) | -106d → -112d |
| CO-SD-CB-TF-220 | Catch Basin Internal Finishes (Benching ) for Storm Drainage Network for Alignment-RD-02 | 2027-06-13 → 2027-06-20 (+7d) | 2027-06-19 → 2027-06-26 (+7d) | -116d → -122d |
| CO-SD-MH-TF-250 | Testing Works for Manholes of Storm Drainage Network for Alignment-RD-02 | 2027-06-13 → 2027-06-20 (+7d) | 2027-06-19 → 2027-06-26 (+7d) | -102d → -108d |
| CO-SD-CB-TF-200 | Testing Works for Catch Basins of Storm Drainage Network for Alignment-RD-02 | 2027-06-20 → 2027-06-27 (+7d) | 2027-06-26 → 2027-07-03 (+7d) | -116d → -122d |
| CO-SD-CB-TF-210 | Install Catch Basin Cover Works for External Finishes of Storm Drainage Network for Alignment-RD-02 | 2027-06-27 → 2027-07-04 (+7d) | 2027-07-05 → 2027-07-12 (+7d) | -116d → -122d |
| 10 | **Sewage Network** | 2027-04-29 → 2027-05-06 (+7d) | 2027-05-25 → 2027-06-01 (+7d) |  |
| TF | **Testing and Finishes** | 2027-04-29 → 2027-05-06 (+7d) | 2027-05-25 → 2027-06-01 (+7d) |  |
| CO-SW-TF-270 | Final Testing For Main Line of Sewage Network for Alignment-RD-02 | 2027-04-29 → 2027-05-06 (+7d) | 2027-05-25 → 2027-06-01 (+7d) | -81d → -87d |
| CO-SW-TF-290 | Testing Works for Main Line Manholes of Sewage Network for Alignment-RD-02 | 2027-04-29 → 2027-05-06 (+7d) | 2027-05-25 → 2027-06-01 (+7d) | -81d → -87d |
| 9 | **Potable Water Network** | 2027-04-26 → 2027-05-03 (+7d) | 2027-06-05 → 2027-06-12 (+7d) |  |
| TF | **Testing and Finishes** | 2027-04-26 → 2027-05-03 (+7d) | 2027-06-05 → 2027-06-12 (+7d) |  |
| CO-PW-TF-170 | Fire Hydrant Finishies (S.Box + Safety + Marker Post ) of Potable Water Network for Alignment-RD-02 | 2027-04-26 → 2027-05-03 (+7d) | 2027-05-11 → 2027-05-24 (+13d) | -90d → -96d |
| CO-PW-TF-180 | Final Finishes works and Covers for Valves and Valve Chambers for Alignment-RD-02 | 2027-05-12 → 2027-05-25 (+13d) | 2027-05-26 → 2027-06-02 (+7d) | -90d → -96d |
| CO-PW-TF-160 | Testing of Potable Water Network for Alignment-RD-02 | 2027-05-27 → 2027-06-03 (+7d) | 2027-06-05 → 2027-06-12 (+7d) | -90d → -96d |
| 13 | **Irrigation Network** | 2027-05-08 → 2027-05-20 (+12d) | 2027-05-11 → 2027-05-24 (+13d) |  |
| TF | **Testing and Finishes** | 2027-05-08 → 2027-05-20 (+12d) | 2027-05-11 → 2027-05-24 (+13d) |  |
| CO-IR-TF-180 | Final Testing (pressure tests) of Irrigation Network for Alignment-RD-02 | 2027-05-08 → 2027-05-20 (+12d) | 2027-05-11 → 2027-05-24 (+13d) | -74d → -80d |
| 1 | **Treated Sewage Effluent (Tse)** | 2027-05-29 → 2027-06-05 (+7d) | 2027-06-03 → 2027-06-10 (+7d) |  |
| TF | **Testing and Finishes** | 2027-05-29 → 2027-06-05 (+7d) | 2027-06-03 → 2027-06-10 (+7d) |  |
| CO-TSE-TF-190 | Final Testing (pressure tests) of Treated Sewage Effluent (Tse) for Alignment-RD-02 | 2027-05-29 → 2027-06-05 (+7d) | 2027-06-03 → 2027-06-10 (+7d) | -89d → -95d |
| 14 | **Medium Voltage Network** | 2027-04-25 → 2027-05-02 (+7d) | 2027-05-01 → 2027-05-08 (+7d) |  |
| TT | **Termination and Testing Works** | 2027-04-25 → 2027-05-02 (+7d) | 2027-05-01 → 2027-05-08 (+7d) |  |
| CO-MV-TF-240 | Testing and Termination Works of Medium Voltage Network for Alignment-RD-02 | 2027-04-25 → 2027-05-02 (+7d) | 2027-05-01 → 2027-05-08 (+7d) | -86d → -92d |
| 6 | **Low Voltage Network** | 2027-05-11 → 2027-05-24 (+13d) | 2027-05-26 → 2027-06-02 (+7d) |  |
| TT | **Termination and Testing Works** | 2027-05-11 → 2027-05-24 (+13d) | 2027-05-26 → 2027-06-02 (+7d) |  |
| CON-LV-TT-150 | Testing and Termination Works for Distribution Pillars Units of Low Voltage Network for Alignment-RD-02 | 2027-05-11 → 2027-05-24 (+13d) | 2027-05-20 → 2027-05-27 (+7d) | -81d → -87d |
| CON-LV-TT-140 | Testing and Termination Works for Substation Low Voltage Panel Boards of Low Voltage Network for Alignment-RD-02 | 2027-05-23 → 2027-05-30 (+7d) | 2027-05-26 → 2027-06-02 (+7d) | -82d → -88d |
| 1 | **Earthing System Works** | 2027-05-22 → 2027-05-29 (+7d) | 2027-05-23 → 2027-05-30 (+7d) |  |
| CON-LV-ES-120 | Earthing System Works for Distribution Pillars Units of Low Voltage Network for Alignment-RD-02 | 2027-05-22 → 2027-05-29 (+7d) | 2027-05-23 → 2027-05-30 (+7d) | -79d → -85d |
| 12 | **Street Lighting Network** | 2027-05-24 → 2027-05-31 (+7d) | 2027-06-10 → 2027-06-17 (+7d) |  |
| TR | **Termination and Testing Works** | 2027-05-24 → 2027-05-31 (+7d) | 2027-06-10 → 2027-06-17 (+7d) |  |
| CO-SL-LP-420 | Installation Works for Lighting Fixtures With Drop Wire of Street Lighting Network for Alignment-RD-02 | 2027-05-24 → 2027-05-31 (+7d) | 2027-05-25 → 2027-06-01 (+7d) | -95d → -101d |
| CO-SL-TF-440 | Termination Works For Panel Board Cables of Street Lighting Network for Alignment-RD-02 | 2027-06-01 → 2027-06-08 (+7d) | 2027-06-07 → 2027-06-14 (+7d) | -92d → -98d |
| CO-SL-TF-450 | Testing Works for Lighting Poles of Street Lighting Network for Alignment-RD-02 | 2027-06-09 → 2027-06-16 (+7d) | 2027-06-10 → 2027-06-17 (+7d) | -95d → -101d |
| CO-SL-TF-460 | Testing Works For Panel Board Cables of Street Lighting Network for Alignment-RD-02 | 2027-06-09 → 2027-06-16 (+7d) | 2027-06-10 → 2027-06-17 (+7d) | -95d → -101d |
| ES | **Earthing System Works** | 2027-05-26 → 2027-06-02 (+7d) | 2027-06-08 → 2027-06-15 (+7d) |  |
| CO-SL-ES-260 | Install Earthing System Works for Lighting Poles of Street Lighting Network for Alignment-RD-02 | 2027-05-26 → 2027-06-02 (+7d) | 2027-06-01 → 2027-06-08 (+7d) | -95d → -101d |
| CO-SL-ES-270 | Install Earthing System Works for Lighting Panel Boards of Street Lighting Network for Alignment-RD-02 | 2027-06-02 → 2027-06-09 (+7d) | 2027-06-08 → 2027-06-15 (+7d) | -95d → -101d |
| 3 | **Telecom and Light Current Network** | 2027-05-13 → 2027-05-26 (+13d) | 2027-05-25 → 2027-06-01 (+7d) |  |
| 1 | **Testing and Finishes** | 2027-05-13 → 2027-05-26 (+13d) | 2027-05-25 → 2027-06-01 (+7d) |  |
| CO-TE-CTV-TF-220 | Testing and Interface modules with Telecom for Alignment-RD-02 | 2027-05-13 → 2027-05-26 (+13d) | 2027-05-22 → 2027-05-29 (+7d) | -81d → -87d |
| CO-TE-CTV-TF-350 | Testing and Interface modules with CCTV, Telephone, MSN and Access Control for Alignment-RD-02 | 2027-05-23 → 2027-05-30 (+7d) | 2027-05-25 → 2027-06-01 (+7d) | -81d → -87d |
| 3 | **Alignment-RD-03-1** | 2026-11-09 → 2026-11-16 (+7d) | 2027-05-25 → 2027-06-01 (+7d) |  |

| ID | Task | Start | Finish | Total float |
| --- | --- | --- | --- | --- |
| EW | **Earthworks** | 2026-11-09 → 2026-11-16 (+7d) | 2026-11-22 → 2026-11-29 (+7d) |  |
| EW | **Earthworks** | 2026-11-09 → 2026-11-16 (+7d) | 2026-11-22 → 2026-11-29 (+7d) |  |
| CO-EW-200 | Excavation and Backfilling Works Upto Design Level for Earthworks for Alignment-RD-03-1 | 2026-11-09 → 2026-11-16 (+7d) | 2026-11-22 → 2026-11-29 (+7d) | -115d → -121d |
| SD | **Storm Drainage Network** | 2026-11-23 → 2026-11-30 (+7d) | 2026-12-30 → 2027-01-06 (+7d) |  |
| MH | **Manholes** | 2026-11-23 → 2026-11-30 (+7d) | 2026-12-30 → 2027-01-06 (+7d) |  |
| CO-SD-MH-180 | Trench Excavation and Bedding Works for Manholes of Storm Drainage Network for Alignment-RD-03-1 | 2026-11-23 → 2026-11-30 (+7d) | 2026-12-03 → 2026-12-10 (+7d) | -112d → -118d |
| CO-SD-MH-190 | Install RC Footing Works for Manholes of Storm Drainage Network for Alignment-RD-03-1 | 2026-12-05 → 2026-12-12 (+7d) | 2026-12-07 → 2026-12-14 (+7d) | -112d → -118d |
| CO-SD-MH-200 | Install RC Wall Rings & Slab Works for Manholes of Storm Drainage Network for Alignment-RD-03-1 | 2026-12-08 → 2026-12-15 (+7d) | 2026-12-19 → 2026-12-26 (+7d) | -112d → -118d |
| CO-SD-MH-220 | Backfilling Works for Manholes of Storm Drainage Network for Alignment-RD-03-1 | 2026-12-20 → 2026-12-27 (+7d) | 2026-12-30 → 2027-01-06 (+7d) | -112d → -118d |
| ML | **Main Line Sections** | 2026-12-20 → 2026-12-27 (+7d) | 2026-12-30 → 2027-01-06 (+7d) |  |
| CO-SD-ML-100 | Trench Excavation and Bedding Works for Main Lines of Storm Drainage Network for Alignment-RD-03-1 | 2026-12-20 → 2026-12-27 (+7d) | 2026-12-22 → 2026-12-29 (+7d) | -112d → -118d |
| CO-SD-ML-120 | Pipes Laying Works for Main Lines of Storm Drainage Network for Alignment-RD-03-1 | 2026-12-23 → 2026-12-30 (+7d) | 2026-12-26 → 2027-01-02 (+7d) | -112d → -118d |
| CO-SD-ML-130 | Trench Backfilling and Compaction Works for Main Lines of Storm Drainage Network for Alignment-RD-03-1 | 2026-12-27 → 2027-01-03 (+7d) | 2026-12-30 → 2027-01-06 (+7d) | -112d → -118d |
| TSE | **Treated Sewage Effluent (Tse)** | 2026-12-31 → 2027-01-07 (+7d) | 2027-05-13 → 2027-05-26 (+13d) |  |
| CO-TSE-ML-150 | Trench Excavation and Bedding Works for Main Lines of Treated Sewage Effluent (Tse) for Alignment-RD-03-1 | 2026-12-31 → 2027-01-07 (+7d) | 2027-01-04 → 2027-01-11 (+7d) | -92d → -98d |
| CO-TSE-ML-160 | Pipes Laying Works for Main Lines of Treated Sewage Effluent (Tse) for Alignment-RD-03-1 | 2027-01-09 → 2027-01-16 (+7d) | 2027-01-12 → 2027-01-19 (+7d) | -95d → -101d |
| CO-TSE-ML-170 | Installation Works for Main Line Valves of Treated Sewage Effluent (Tse) for Alignment-RD-03-1 | 2027-01-13 → 2027-01-20 (+7d) | 2027-01-19 → 2027-01-26 (+7d) | -95d → -101d |
| CO-TSE-ML-190 | Installation Works for Valve and Washout Chambers of Treated Sewage Effluent (Tse) for Alignment-RD-03-1 | 2027-01-20 → 2027-01-27 (+7d) | 2027-01-26 → 2027-02-02 (+7d) | -95d → -101d |
| CO-TSE-ML-180 | Trench Backfilling and Compaction Works for Treated Sewage Effluent (Tse) for Alignment-RD-03-1 | 2027-01-27 → 2027-02-03 (+7d) | 2027-02-01 → 2027-02-08 (+7d) | -95d → -101d |
| TA | **Treated Sewage Effluent (Tse) Storage Tank** | 2027-05-08 → 2027-05-20 (+12d) | 2027-05-13 → 2027-05-26 (+13d) |  |
| CO-TSE-TF-180 | Installation of Storage Tank of Treated Sewage Effluent (Tse) for Alignment-RD-03-1 | 2027-05-08 → 2027-05-20 (+12d) | 2027-05-13 → 2027-05-26 (+13d) | -89d → -95d |
| PW | **Potable Water Network** | 2027-02-02 → 2027-02-09 (+7d) | 2027-05-06 → 2027-05-13 (+7d) |  |
| ML | **Main Line Sections** | 2027-02-02 → 2027-02-09 (+7d) | 2027-02-21 → 2027-02-28 (+7d) |  |
| CO-PW-ML-100 | Trench Excavation and Bedding Works for Main Lines of Potable Water Network for Alignment-RD-03-1 | 2027-02-02 → 2027-02-09 (+7d) | 2027-02-07 → 2027-02-14 (+7d) | -95d → -101d |
| CO-PW-ML-110 | Pipes Laying and accessories for Main Lines of Potable Water Network for Alignment-RD-03-1 | 2027-02-08 → 2027-02-15 (+7d) | 2027-02-13 → 2027-02-20 (+7d) | -95d → -101d |
| CO-PW-ML-130 | Trench Backfilling and Compaction Works for Main Lines of Potable Water Network for Alignment-RD-03-1 | 2027-02-14 → 2027-02-21 (+7d) | 2027-02-21 → 2027-02-28 (+7d) | -95d → -101d |
| VC | **Valve Chamber** | 2027-02-04 → 2027-02-11 (+7d) | 2027-02-27 → 2027-03-06 (+7d) |  |
| CO-PW-VC-170 | Excavation Works for Main Line Valves and Valve Chambers of Potable Water Network for Alignment-RD-03-1 | 2027-02-04 → 2027-02-11 (+7d) | 2027-02-07 → 2027-02-14 (+7d) | -81d → -87d |
| CO-PW-VC180 | Installation of Valve Chambers of Potable Water Network for Alignment-RD-03-1 | 2027-02-08 → 2027-02-15 (+7d) | 2027-02-10 → 2027-02-17 (+7d) | -81d → -87d |
| CO-PW-VC-190 | Installation Works for Valves of Potable Water Network for Alignment-RD-03-1 | 2027-02-21 → 2027-02-28 (+7d) | 2027-02-23 → 2027-03-02 (+7d) | -89d → -95d |
| CO-PW-VC-220 | Backfilling Works for Main Line Valves and Valve Chambers of Potable Water Network for Alignment-RD-03-1 | 2027-02-24 → 2027-03-03 (+7d) | 2027-02-27 → 2027-03-06 (+7d) | -89d → -95d |
| FH | **Fire Hydrant** | 2027-02-08 → 2027-02-15 (+7d) | 2027-02-27 → 2027-03-06 (+7d) |  |
| CO-PW-FH-140 | Excavation Works for Fire Hydrants of Potable Water Network for Alignment-RD-03-1 | 2027-02-08 → 2027-02-15 (+7d) | 2027-02-09 → 2027-02-16 (+7d) | -78d → -84d |
| CO-PW-FH-150 | Installation Works for Fire Hydrant of Potable Water Network for Alignment-RD-03-1 | 2027-02-14 → 2027-02-21 (+7d) | 2027-02-15 → 2027-02-22 (+7d) | -81d → -87d |
| CO-PW-FH-160 | Trench Backfilling and Compaction Works for Fire Hydrants of Potable Water Network for Alignment-RD-03-1 | 2027-02-25 → 2027-03-04 (+7d) | 2027-02-27 → 2027-03-06 (+7d) | -89d → -95d |
| TA | **Potable Water Network Storage Tank** | 2027-05-01 → 2027-05-08 (+7d) | 2027-05-06 → 2027-05-13 (+7d) |  |
| CO-PW-TF-130 | Installation of Storage Tank of Potable Water Network for Alignment-RD-03-1 | 2027-05-01 → 2027-05-08 (+7d) | 2027-05-06 → 2027-05-13 (+7d) | -89d → -95d |
| LV | **Low Voltage Network** | 2027-02-22 → 2027-03-01 (+7d) | 2027-04-24 → 2027-05-01 (+7d) |  |
| MLVC | **Main Low Voltage Cables Works ( Cable 300 MM )** | 2027-02-22 → 2027-03-01 (+7d) | 2027-03-18 → 2027-03-25 (+7d) |  |
| CON-LV-ML-100 | Trench Excavation and Bedding Works for Main Cable of Low Voltage Network for Alignment-RD-03-1 | 2027-02-22 → 2027-03-01 (+7d) | 2027-03-02 → 2027-03-13 (+11d) | -95d → -101d |
| CON-LV-ML-110 | Cable Laying Works for Main Cable of Low Voltage Network for Alignment-RD-03-1 | 2027-03-03 → 2027-03-14 (+11d) | 2027-03-14 → 2027-03-21 (+7d) | -95d → -101d |
| CON-LV-ML-120 | Trench Backfilling and Compaction Works for Main Cable of Low Voltage Network for Alignment-RD-03-1 | 2027-03-15 → 2027-03-22 (+7d) | 2027-03-18 → 2027-03-25 (+7d) | -92d → -98d |
| SLVC | **Service Low Voltage Cables Works ( Cable 70 MM )** | 2027-03-03 → 2027-03-14 (+11d) | 2027-04-10 → 2027-04-17 (+7d) |  |
| CON-LV-HC-100 | Trench Excavation and Bedding Works for Service Cable of Low Voltage Network for Alignment-RD-03-1 | 2027-03-03 → 2027-03-14 (+11d) | 2027-03-07 → 2027-03-17 (+10d) | -92d → -98d |
| CON-LV-HC-110 | Cable Laying Works for Service Cable of Low Voltage Network for Alignment-RD-03-1 | 2027-03-30 → 2027-04-06 (+7d) | 2027-04-06 → 2027-04-13 (+7d) | -108d → -114d |
| CON-LV-HC-120 | Trench Backfilling and Compaction Works for Service Cable of Low Voltage Network for Alignment-RD-03-1 | 2027-04-07 → 2027-04-14 (+7d) | 2027-04-10 → 2027-04-17 (+7d) | -108d → -114d |
| DP | **Distribution Pillars Works** | 2027-04-11 → 2027-04-18 (+7d) | 2027-04-24 → 2027-05-01 (+7d) |  |
| CON-LV-DP-100 | Foundation Excavation Works for Distribution Pillars of Low Voltage Network for Alignment-RD-03-1 | 2027-04-11 → 2027-04-18 (+7d) | 2027-04-14 → 2027-04-21 (+7d) | -108d → -114d |
| CON-LV-DP-110 | Pouring Plain Concrete For Distribution Pillar Units of Low Voltage Network for Alignment-RD-03-1 | 2027-04-15 → 2027-04-22 (+7d) | 2027-04-19 → 2027-04-26 (+7d) | -108d → -114d |
| CON-LV-DP-120 | Installation Works for Distribution Pillar Units of Low Voltage Network for Alignment-RD-03-1 | 2027-04-20 → 2027-04-27 (+7d) | 2027-04-24 → 2027-05-01 (+7d) | -108d → -114d |
| SL | **Street Lighting Network** | 2027-03-02 → 2027-03-13 (+11d) | 2027-03-29 → 2027-04-05 (+7d) |  |
| LP | **Lighting Poles Works** | 2027-03-02 → 2027-03-13 (+11d) | 2027-03-24 → 2027-03-31 (+7d) |  |
| CO-SL-LP-550 | Installation Works for Lighting Poles Foundation of Street Lighting Network for Alignment-RD-03-1 | 2027-03-02 → 2027-03-13 (+11d) | 2027-03-07 → 2027-03-17 (+10d) | -93d → -99d |
| CO-SL-LP-560 | Installation Works for Lighting Poles of Street Lighting Network for Alignment-RD-03-1 | 2027-03-13 → 2027-03-20 (+7d) | 2027-03-17 → 2027-03-24 (+7d) | -94d → -100d |
| CO-SL-LP-570 | Backfilling Works for Lighting Poles of Street Lighting Network for Alignment-RD-03-1 | 2027-03-18 → 2027-03-25 (+7d) | 2027-03-24 → 2027-03-31 (+7d) | -90d → -96d |
| CW | **Cabling Works** | 2027-03-18 → 2027-03-25 (+7d) | 2027-03-29 → 2027-04-05 (+7d) |  |
| CO-SL-CL-410 | Cable Laying Works for Street Lighting Network for Alignment-RD-03-1 | 2027-03-18 → 2027-03-25 (+7d) | 2027-03-23 → 2027-03-30 (+7d) | -94d → -100d |
| CO-SL-CL-420 | Trench Backfilling and Compaction Works for Street Lighting Network for Alignment-RD-03-1 | 2027-03-24 → 2027-03-31 (+7d) | 2027-03-29 → 2027-04-05 (+7d) | -94d → -100d |
| TE | **Telecom and Light Current Network** | 2027-04-11 → 2027-04-18 (+7d) | 2027-04-21 → 2027-04-28 (+7d) |  |
| PD | **Ducts Works** | 2027-04-11 → 2027-04-18 (+7d) | 2027-04-19 → 2027-04-26 (+7d) |  |
| CO-TE-DW-110 | Pipes Laying Works for Ducts of Telecom Network for Alignment-RD-03-1 | 2027-04-11 → 2027-04-18 (+7d) | 2027-04-14 → 2027-04-21 (+7d) | -104d → -110d |
| CO-TE-DW-130 | Trench Backfilling and Compaction Works for Ducts of Telecom Network for Alignment-RD-03-1 | 2027-04-15 → 2027-04-22 (+7d) | 2027-04-19 → 2027-04-26 (+7d) | -104d → -110d |
| MH | **Manholes Works** | 2027-04-11 → 2027-04-18 (+7d) | 2027-04-17 → 2027-04-24 (+7d) |  |
| CO-TE-MH-140 | Excavation Works for Manholes of Telecom Network for Alignment-RD-03-1 | 2027-04-11 → 2027-04-18 (+7d) | 2027-04-12 → 2027-04-19 (+7d) | -102d → -108d |
| CO-TE-MH-150 | Installation Works for Manholes of Telecom Network for Alignment-RD-03-1 | 2027-04-13 → 2027-04-20 (+7d) | 2027-04-14 → 2027-04-21 (+7d) | -102d → -108d |
| CO-TE-MH-160 | Backfilling Works for Manholes of Telecom Network for Alignment-RD-03-1 | 2027-04-15 → 2027-04-22 (+7d) | 2027-04-17 → 2027-04-24 (+7d) | -102d → -108d |
| DD | **CCTV, Telephone, MSN, ACs System Works** | 2027-04-18 → 2027-04-25 (+7d) | 2027-04-21 → 2027-04-28 (+7d) |  |
| CO-TE-CTV-110 | Installation of CCTV, Telephone, ACS and MSN Systems Cables for Alignment-RD-03-1 | 2027-04-18 → 2027-04-25 (+7d) | 2027-04-21 → 2027-04-28 (+7d) | -81d → -87d |
| RD | **Road Works** | 2027-04-25 → 2027-05-02 (+7d) | 2027-05-25 → 2027-06-01 (+7d) |  |
| RD | **Pre-Bituminous Construction** | 2027-04-25 → 2027-05-02 (+7d) | 2027-05-10 → 2027-05-23 (+13d) |  |

| ID | Task | Start | Finish | Total float |
| --- | --- | --- | --- | --- |
| CO-RD-PB-140 | Subgrade Layer for Road Works for Alignment-RD-03-1 | 2027-04-25 → 2027-05-02 (+7d) | 2027-05-02 → 2027-05-09 (+7d) | -108d → -114d |
| CO-RD-PB-150 | Aggregate Base Course Layer for Road Works for Alignment-RD-03-1 | 2027-05-03 → 2027-05-10 (+7d) | 2027-05-10 → 2027-05-23 (+13d) | -82d → -88d |
| 1 | **Bituminous Construction** | 2027-05-03 → 2027-05-10 (+7d) | 2027-05-06 → 2027-05-13 (+7d) |  |
| CO-RD-B-160 | Bituminous Base Courses Layers for Road Works for Alignment-RD-03-1 | 2027-05-03 → 2027-05-10 (+7d) | 2027-05-04 → 2027-05-11 (+7d) | -82d → -88d |
| CON-RD-MR-150 | Preparation of Asphaltic Wearing Course Layer for Roads Network for Alignment-RD-03-1 | 2027-05-05 → 2027-05-12 (+7d) | 2027-05-06 → 2027-05-13 (+7d) | -79d → -85d |
| LS | **Pavement Works** | 2027-05-05 → 2027-05-12 (+7d) | 2027-05-25 → 2027-06-01 (+7d) |  |
| CO-RD-PV-160 | Fixing of Curbstone for Sidewalks Pavement for Alignment-RD-03-1 | 2027-05-05 → 2027-05-12 (+7d) | 2027-05-10 → 2027-05-23 (+13d) | -82d → -88d |
| CO-RD-PV-170 | Fixing of Interlock Tiles for Sidewalks Pavement for Alignment-RD-03-1 | 2027-05-11 → 2027-05-24 (+13d) | 2027-05-25 → 2027-06-01 (+7d) | -82d → -88d |
| TS | **Traffic Signs Boards and Roads Marking** | 2027-05-11 → 2027-05-24 (+13d) | 2027-05-23 → 2027-05-30 (+7d) |  |
| CO-RD-F-RM-180 | Application of Road Marking Works For Road Works for Alignment-RD-03-1 | 2027-05-11 → 2027-05-24 (+13d) | 2027-05-12 → 2027-05-25 (+13d) | -82d → -88d |
| CO-RD-F-TS-120 | Installation Works of Traffic Signs Boards For Road Works for Alignment-RD-03-1 | 2027-05-22 → 2027-05-29 (+7d) | 2027-05-23 → 2027-05-30 (+7d) | -84d → -90d |
| 3 | **Finishes for Infrastructure Networks** | 2027-04-22 → 2027-04-29 (+7d) | 2027-05-23 → 2027-05-30 (+7d) |  |
| 11 | **Storm Drainage Network** | 2027-05-01 → 2027-05-08 (+7d) | 2027-05-06 → 2027-05-13 (+7d) |  |
| TF | **Testing and Finishes** | 2027-05-01 → 2027-05-08 (+7d) | 2027-05-06 → 2027-05-13 (+7d) |  |
| CO-SD-ML-TF-100 | Testing Work for Pipes of Storm Drainage Network for Alignment-RD-03-1 | 2027-05-01 → 2027-05-08 (+7d) | 2027-05-03 → 2027-05-10 (+7d) | -92d → -98d |
| CO-SD-MH-TF-210 | Testing Works for Manholes of Storm Drainage Network for Alignment-RD-03-1 | 2027-05-04 → 2027-05-11 (+7d) | 2027-05-06 → 2027-05-13 (+7d) | -76d → -82d |
| 9 | **Potable Water Network** | 2027-04-26 → 2027-05-03 (+7d) | 2027-04-29 → 2027-05-06 (+7d) |  |
| TF | **Testing and Finishes** | 2027-04-26 → 2027-05-03 (+7d) | 2027-04-29 → 2027-05-06 (+7d) |  |
| CO-PW-TF-100 | Final Finishes works and Covers for Valves and Valve Chambers for Alignment-RD-03-1 | 2027-04-26 → 2027-05-03 (+7d) | 2027-04-29 → 2027-05-06 (+7d) | -89d → -95d |
| CO-PW-TF-110 | Testing of Potable Water Network for Alignment-RD-03-1 | 2027-04-26 → 2027-05-03 (+7d) | 2027-04-27 → 2027-05-04 (+7d) | -75d → -81d |
| CO-PW-TF-120 | Fire Hydrant Finishies (S.Box + Safety + Marker Post ) of Potable Water Network for Alignment-RD-03-1 | 2027-04-26 → 2027-05-03 (+7d) | 2027-04-28 → 2027-05-05 (+7d) | -90d → -96d |
| 1 | **Treated Sewage Effluent (Tse)** | 2027-05-20 → 2027-05-27 (+7d) | 2027-05-20 → 2027-05-27 (+7d) |  |
| TF | **Testing and Finishes** | 2027-05-20 → 2027-05-27 (+7d) | 2027-05-20 → 2027-05-27 (+7d) |  |
| CO-TSE-TF-170 | Final Testing (pressure tests) of Treated Sewage Effluent (Tse) for Alignment-RD-03-1 | 2027-05-20 → 2027-05-27 (+7d) | 2027-05-20 → 2027-05-27 (+7d) | -89d → -95d |
| 6 | **Low Voltage Network** | 2027-04-25 → 2027-05-02 (+7d) | 2027-04-28 → 2027-05-05 (+7d) |  |
| TT | **Termination and Testing Works** | 2027-04-25 → 2027-05-02 (+7d) | 2027-04-28 → 2027-05-05 (+7d) |  |
| CON-LV-TT-110 | Testing and Termination Works for Distribution Pillars Units of Low Voltage Network for Alignment-RD-03-1 | 2027-04-25 → 2027-05-02 (+7d) | 2027-04-26 → 2027-05-03 (+7d) | -79d → -85d |
| CON-LV-TT-100 | Testing and Termination Works for Substation Low Voltage Panel Boards of Low Voltage Network for Alignment-RD-03-1 | 2027-04-27 → 2027-05-04 (+7d) | 2027-04-28 → 2027-05-05 (+7d) | -69d → -75d |
| 1 | **Earthing System Works** | 2027-04-27 → 2027-05-04 (+7d) | 2027-04-28 → 2027-05-05 (+7d) |  |
| CON-LV-ES-100 | Earthing System Works for Distribution Pillars Units of Low Voltage Network for Alignment-RD-03-1 | 2027-04-27 → 2027-05-04 (+7d) | 2027-04-28 → 2027-05-05 (+7d) | -79d → -85d |
| 12 | **Street Lighting Network** | 2027-04-26 → 2027-05-03 (+7d) | 2027-05-23 → 2027-05-30 (+7d) |  |
| TR | **Termination and Testing Works** | 2027-04-26 → 2027-05-03 (+7d) | 2027-05-23 → 2027-05-30 (+7d) |  |
| CO-SL-LP-580 | Installation Works for Lighting Fixtures With Drop Wire of Street Lighting Network for Alignment-RD-03-1 | 2027-04-26 → 2027-05-03 (+7d) | 2027-05-02 → 2027-05-09 (+7d) | -86d → -92d |
| CO-SL-TF-570 | Testing Works for Lighting Poles of Street Lighting Network for Alignment-RD-03-1 | 2027-05-11 → 2027-05-24 (+13d) | 2027-05-23 → 2027-05-30 (+7d) | -85d → -91d |
| ES | **Earthing System Works** | 2027-05-04 → 2027-05-11 (+7d) | 2027-05-09 → 2027-05-22 (+13d) |  |
| CO-SL-ES-320 | Install Earthing System Works for Lighting Poles of Street Lighting Network for Alignment-RD-03-1 | 2027-05-04 → 2027-05-11 (+7d) | 2027-05-06 → 2027-05-13 (+7d) | -87d → -93d |
| CO-SL-ES-330 | Install Earthing System Works for Lighting Panel Boards of Street Lighting Network for Alignment-RD-03-1 | 2027-05-08 → 2027-05-20 (+12d) | 2027-05-09 → 2027-05-22 (+13d) | -86d → -92d |
| 3 | **Telecom and Light Current Network** | 2027-04-22 → 2027-04-29 (+7d) | 2027-04-28 → 2027-05-05 (+7d) |  |
| 1 | **Testing and Finishes** | 2027-04-22 → 2027-04-29 (+7d) | 2027-04-28 → 2027-05-05 (+7d) |  |
| CO-TE-CTV-TF-140 | Testing and Interface modules with Telecom for Alignment-RD-03-1 | 2027-04-22 → 2027-04-29 (+7d) | 2027-04-28 → 2027-05-05 (+7d) | -81d → -87d |
| CO-TE-CTV-TF-330 | Testing and Interface modules with CCTV, Telephone, MSN and Access Control for Alignment-RD-03-1 | 2027-04-22 → 2027-04-29 (+7d) | 2027-04-28 → 2027-05-05 (+7d) | -81d → -87d |
| 2 | **Alignment-RD-03-2** | 2026-11-09 → 2026-11-16 (+7d) | 2027-06-28 → 2027-07-05 (+7d) |  |
| EW | **Earthworks** | 2026-11-09 → 2026-11-16 (+7d) | 2026-11-22 → 2026-11-29 (+7d) |  |
| EW | **Earthworks** | 2026-11-09 → 2026-11-16 (+7d) | 2026-11-22 → 2026-11-29 (+7d) |  |
| CO-EW-240 | Excavation and Backfilling Works Upto Design Level for Earthworks for Alignment-RD-03-2 | 2026-11-09 → 2026-11-16 (+7d) | 2026-11-22 → 2026-11-29 (+7d) | -60d → -66d |
| SD | **Storm Drainage Network** | 2026-12-31 → 2027-01-07 (+7d) | 2027-02-23 → 2027-03-02 (+7d) |  |
| MH | **Manholes** | 2026-12-31 → 2027-01-07 (+7d) | 2027-02-10 → 2027-02-17 (+7d) |  |
| CO-SD-MH-350 | Trench Excavation and Bedding Works for Manholes of Storm Drainage Network for Alignment-RD-03-2 | 2026-12-31 → 2027-01-07 (+7d) | 2027-01-11 → 2027-01-18 (+7d) | -93d → -99d |
| CO-SD-MH-360 | Install RC Footing Works for Manholes of Storm Drainage Network for Alignment-RD-03-2 | 2027-01-12 → 2027-01-19 (+7d) | 2027-01-21 → 2027-01-28 (+7d) | -93d → -99d |
| CO-SD-MH-370 | Install RC Wall Rings & Slab Works for Manholes of Storm Drainage Network for Alignment-RD-03-2 | 2027-01-23 → 2027-01-30 (+7d) | 2027-02-02 → 2027-02-09 (+7d) | -93d → -99d |
| CO-SD-MH-380 | Backfilling Works for Manholes of Storm Drainage Network for Alignment-RD-03-2 | 2027-02-03 → 2027-02-10 (+7d) | 2027-02-10 → 2027-02-17 (+7d) | -82d → -88d |
| ML | **Main Line Sections** | 2027-02-03 → 2027-02-10 (+7d) | 2027-02-23 → 2027-03-02 (+7d) |  |
| CO-SD-ML-230 | Trench Excavation and Bedding Works for Main Lines of Storm Drainage Network for Alignment-RD-03-2 | 2027-02-03 → 2027-02-10 (+7d) | 2027-02-10 → 2027-02-17 (+7d) | -93d → -99d |
| CO-SD-ML-240 | Pipes Laying Works for Main Lines of Storm Drainage Network for Alignment-RD-03-2 | 2027-02-11 → 2027-02-18 (+7d) | 2027-02-16 → 2027-02-23 (+7d) | -93d → -99d |
| CO-SD-ML-250 | Trench Backfilling and Compaction Works for Main Lines of Storm Drainage Network for Alignment-RD-03-2 | 2027-02-17 → 2027-02-24 (+7d) | 2027-02-23 → 2027-03-02 (+7d) | -93d → -99d |
| MV | **Medium Voltage Network** | 2027-02-24 → 2027-03-03 (+7d) | 2027-03-15 → 2027-03-22 (+7d) |  |
| CW | **Cabling Works** | 2027-02-24 → 2027-03-03 (+7d) | 2027-03-15 → 2027-03-22 (+7d) |  |
| CO-MV-ML-370 | Trench Excavation and Bedding Works for Medium Voltage Network for Alignment-RD-03-2 | 2027-02-24 → 2027-03-03 (+7d) | 2027-03-01 → 2027-03-08 (+7d) | -93d → -99d |
| CO-MV-ML-380 | Duct Laying Works for Medium Voltage Network for Alignment-RD-03-2 | 2027-03-02 → 2027-03-13 (+11d) | 2027-03-07 → 2027-03-17 (+10d) | -89d → -95d |
| CO-MV-ML-390 | Trench Backfilling and Compaction Works for Medium Voltage Network for Alignment-RD-03-2 | 2027-03-08 → 2027-03-18 (+10d) | 2027-03-15 → 2027-03-22 (+7d) | -89d → -95d |
| LV | **Low Voltage Network** | 2027-03-30 → 2027-04-06 (+7d) | 2027-05-03 → 2027-05-10 (+7d) |  |
| MLVC | **Main Low Voltage Cables Works ( Cable 300 MM )** | 2027-03-30 → 2027-04-06 (+7d) | 2027-04-22 → 2027-04-29 (+7d) |  |
| CON-LV-ML-220 | Trench Excavation and Bedding Works for Main Cable of Low Voltage Network for Alignment-RD-03-2 | 2027-03-30 → 2027-04-06 (+7d) | 2027-04-05 → 2027-04-12 (+7d) | -101d → -107d |
| CON-LV-ML-230 | Cable Laying Works for Main Cable of Low Voltage Network for Alignment-RD-03-2 | 2027-04-06 → 2027-04-13 (+7d) | 2027-04-15 → 2027-04-22 (+7d) | -101d → -107d |
| CON-LV-ML-240 | Trench Backfilling and Compaction Works for Main Cable of Low Voltage Network for Alignment-RD-03-2 | 2027-04-17 → 2027-04-24 (+7d) | 2027-04-22 → 2027-04-29 (+7d) | -98d → -104d |
| SLVC | **Service Low Voltage Cables Works ( Cable 70 MM )** | 2027-04-06 → 2027-04-13 (+7d) | 2027-05-03 → 2027-05-10 (+7d) |  |
| CON-LV-HC-220 | Trench Excavation and Bedding Works for Service Cable of Low Voltage Network for Alignment-RD-03-2 | 2027-04-06 → 2027-04-13 (+7d) | 2027-04-11 → 2027-04-18 (+7d) | -97d → -103d |
| CON-LV-HC-230 | Cable Laying Works for Service Cable of Low Voltage Network for Alignment-RD-03-2 | 2027-04-17 → 2027-04-24 (+7d) | 2027-04-26 → 2027-05-03 (+7d) | -101d → -107d |
| CON-LV-HC-240 | Trench Backfilling and Compaction Works for Service Cable of Low Voltage Network for Alignment-RD-03-2 | 2027-04-27 → 2027-05-04 (+7d) | 2027-05-03 → 2027-05-10 (+7d) | -101d → -107d |
| DP | **Distribution Pillars Works** | 2027-04-07 → 2027-04-14 (+7d) | 2027-04-19 → 2027-04-26 (+7d) |  |

| ID | Task | Start | Finish | Total float | Other |
| --- | --- | --- | --- | --- | --- |
| CON-LV-DP-220 | Foundation Excavation Works for Distribution Pillars of Low Voltage Network for Alignment-RD-03-2 | 2027-04-07 → 2027-04-14 (+7d) | 2027-04-14 → 2027-04-21 (+7d) | -89d → -95d |  |
| CON-LV-DP-230 | Pouring Plain Concrete For Distribution Pillar Units of Low Voltage Network for Alignment-RD-03-2 | 2027-04-15 → 2027-04-22 (+7d) | 2027-04-17 → 2027-04-24 (+7d) | -89d → -95d |  |
| CON-LV-DP-240 | Installation Works for Distribution Pillar Units of Low Voltage Network for Alignment-RD-03-2 | 2027-04-18 → 2027-04-25 (+7d) | 2027-04-19 → 2027-04-26 (+7d) | -89d → -95d |  |
| SL | **Street Lighting Network** | 2027-03-02 → 2027-03-13 (+11d) | 2027-04-11 → 2027-04-18 (+7d) |  |  |
| LP | **Lighting Poles Works** | 2027-03-02 → 2027-03-13 (+11d) | 2027-03-24 → 2027-03-31 (+7d) |  |  |
| CO-SL-LP-500 | Installation Works for Lighting Poles Foundation of Street Lighting Network for Alignment-RD-03-2 | 2027-03-02 → 2027-03-13 (+11d) | 2027-03-07 → 2027-03-17 (+10d) | -82d → -88d |  |
| CO-SL-LP-510 | Installation Works for Lighting Poles of Street Lighting Network for Alignment-RD-03-2 | 2027-03-13 → 2027-03-20 (+7d) | 2027-03-17 → 2027-03-24 (+7d) | -83d → -89d |  |
| CO-SL-LP-520 | Backfilling Works for Lighting Poles of Street Lighting Network for Alignment-RD-03-2 | 2027-03-18 → 2027-03-25 (+7d) | 2027-03-24 → 2027-03-31 (+7d) | -79d → -85d |  |
| CW | **Cabling Works** | 2027-03-31 → 2027-04-07 (+7d) | 2027-04-11 → 2027-04-18 (+7d) |  |  |
| CO-SL-CL-380 | Cable Laying Works for Street Lighting Network for Alignment-RD-03-2 | 2027-03-31 → 2027-04-07 (+7d) | 2027-04-05 → 2027-04-12 (+7d) | -94d → -100d |  |
| CO-SL-CL-390 | Trench Backfilling and Compaction Works for Street Lighting Network for Alignment-RD-03-2 | 2027-04-06 → 2027-04-13 (+7d) | 2027-04-11 → 2027-04-18 (+7d) | -94d → -100d |  |
| TE | **Telecom and Light Current Network** | 2027-05-04 → 2027-05-11 (+7d) | 2027-05-06 → 2027-05-13 (+7d) |  |  |
| DD | **CCTV, Telephone, MSN, ACs System Works** | 2027-05-04 → 2027-05-11 (+7d) | 2027-05-06 → 2027-05-13 (+7d) |  |  |
| CO-TE-CTV-240 | Installation of CCTV, Telephone, ACS and MSN Systems Cables for Alignment-RD-03-2 | 2027-05-04 → 2027-05-11 (+7d) | 2027-05-06 → 2027-05-13 (+7d) | -84d → -90d |  |
| RD | **Road Works** | 2027-05-11 → 2027-05-24 (+13d) | 2027-06-28 → 2027-07-05 (+7d) |  |  |
| RD | **Pre-Bituminous Construction** | 2027-05-11 → 2027-05-24 (+13d) | 2027-05-27 → 2027-06-03 (+7d) |  |  |
| CO-RD-PB-220 | Subgrade Layer for Road Works for Alignment-RD-03-2 | 2027-05-11 → 2027-05-24 (+13d) | 2027-05-22 → 2027-05-29 (+7d) | -107d → -113d |  |
| CO-RD-PB-230 | Installation of Aggregate Base Course Layer and Interlock Works for Road Works for Alignment-RD-03-2 | 2027-05-23 → 2027-05-30 (+7d) | 2027-05-27 → 2027-06-03 (+7d) | -107d → -113d |  |
| 1 | **Bituminous Construction** | 2027-05-29 → 2027-06-05 (+7d) | 2027-06-21 → 2027-06-28 (+7d) |  |  |
| CO-RD-B-240 | Bituminous Base Courses Layers for Road Works for Alignment-RD-03-2 | 2027-05-29 → 2027-06-05 (+7d) | 2027-05-31 → 2027-06-07 (+7d) | -107d → -113d |  |
| CON-RD-MR-230 | Preparation of Asphaltic Wearing Course Layer for Roads Network for Alignment-RD-03-2 | 2027-06-19 → 2027-06-26 (+7d) | 2027-06-21 → 2027-06-28 (+7d) | -111d → -117d |  |
| LS | **Pavement Works** | 2027-06-01 → 2027-06-08 (+7d) | 2027-06-16 → 2027-06-23 (+7d) |  |  |
| CO-RD-PV-240 | Fixing of Curbstone for Sidewalks Pavement for Alignment-RD-03-2 | 2027-06-01 → 2027-06-08 (+7d) | 2027-06-08 → 2027-06-15 (+7d) | -107d → -113d |  |
| CO-RD-PV-250 | Fixing of Interlock Tiles for Sidewalks Pavement for Alignment-RD-03-2 | 2027-06-09 → 2027-06-16 (+7d) | 2027-06-16 → 2027-06-23 (+7d) | -107d → -113d |  |
| TS | **Traffic Signs Boards and Roads Marking** | 2027-06-22 → 2027-06-29 (+7d) | 2027-06-28 → 2027-07-05 (+7d) |  |  |
| CO-RD-F-RM-220 | Application of Road Marking Works For Road Works for Alignment-RD-03-2 | 2027-06-22 → 2027-06-29 (+7d) | 2027-06-24 → 2027-07-01 (+7d) | -111d → -117d |  |
| CO-RD-F-TS-160 | Installation Works of Traffic Signs Boards For Road Works for Alignment-RD-03-2 | 2027-06-26 → 2027-07-03 (+7d) | 2027-06-28 → 2027-07-05 (+7d) | -111d → -117d |  |
| 3 | **Finishes for Infrastructure Networks** | 2027-03-16 → 2027-03-23 (+7d) | 2027-06-17 → 2027-06-24 (+7d) |  |  |
| 11 | **Storm Drainage Network** | 2027-05-31 → 2027-06-07 (+7d) | 2027-06-17 → 2027-06-24 (+7d) |  |  |
| TF | **Testing and Finishes** | 2027-05-31 → 2027-06-07 (+7d) | 2027-06-17 → 2027-06-24 (+7d) |  |  |
| CO-SD-MH-TF-290 | Testing Works for Manholes of Storm Drainage Network for Alignment-RD-03-2 | 2027-05-31 → 2027-06-07 (+7d) | 2027-06-06 → 2027-06-13 (+7d) | -101d → -107d |  |
| CO-SD-CB-TF-260 | Testing Works for Catch Basins of Storm Drainage Network for Alignment-RD-03-2 | 2027-06-08 → 2027-06-15 (+7d) | 2027-06-17 → 2027-06-24 (+7d) | -111d → -117d |  |
| 14 | **Medium Voltage Network** | 2027-03-16 → 2027-03-23 (+7d) | 2027-03-22 → 2027-03-29 (+7d) |  |  |
| TT | **Termination and Testing Works** | 2027-03-16 → 2027-03-23 (+7d) | 2027-03-22 → 2027-03-29 (+7d) |  |  |
| CO-MV-TF-260 | Testing and Termination Works of Medium Voltage Network for Alignment-RD-03-2 | 2027-03-16 → 2027-03-23 (+7d) | 2027-03-22 → 2027-03-29 (+7d) | -52d → -58d |  |
| 6 | **Low Voltage Network** | 2027-04-20 → 2027-04-27 (+7d) | 2027-05-11 → 2027-05-24 (+13d) |  |  |
| TT | **Termination and Testing Works** | 2027-04-20 → 2027-04-27 (+7d) | 2027-05-11 → 2027-05-24 (+13d) |  |  |
| CON-LV-TT-190 | Testing and Termination Works for Distribution Pillars Units of Low Voltage Network for Alignment-RD-03-2 | 2027-04-20 → 2027-04-27 (+7d) | 2027-04-26 → 2027-05-03 (+7d) | -68d → -74d |  |
| CON-LV-TT-180 | Testing and Termination Works for Substation Low Voltage Panel Boards of Low Voltage Network for Alignment-RD-03-2 | 2027-05-04 → 2027-05-11 (+7d) | 2027-05-11 → 2027-05-24 (+13d) | -74d → -80d |  |
| 1 | **Earthing System Works** | 2027-04-27 → 2027-05-04 (+7d) | 2027-04-28 → 2027-05-05 (+7d) |  |  |
| CON-LV-ES-140 | Earthing System Works for Distribution Pillars Units of Low Voltage Network for Alignment-RD-03-2 | 2027-04-27 → 2027-05-04 (+7d) | 2027-04-28 → 2027-05-05 (+7d) | -63d → -69d |  |
| 12 | **Street Lighting Network** | 2027-04-19 → 2027-04-26 (+7d) | 2027-05-10 → 2027-05-23 (+13d) |  |  |
| TR | **Termination and Testing Works** | 2027-04-19 → 2027-04-26 (+7d) | 2027-05-10 → 2027-05-23 (+13d) |  |  |
| CO-SL-LP-530 | Installation Works for Lighting Fixtures With Drop Wire of Street Lighting Network for Alignment-RD-03-2 | 2027-04-19 → 2027-04-26 (+7d) | 2027-04-25 → 2027-05-02 (+7d) | -100d → -106d |  |
| CO-SL-TF-530 | Testing Works for Lighting Poles of Street Lighting Network for Alignment-RD-03-2 | 2027-05-04 → 2027-05-11 (+7d) | 2027-05-10 → 2027-05-23 (+13d) | -107d → -113d |  |
| ES | **Earthing System Works** | 2027-05-04 → 2027-05-11 (+7d) | 2027-05-09 → 2027-05-22 (+13d) |  |  |
| CO-SL-ES-300 | Install Earthing System Works for Lighting Poles of Street Lighting Network for Alignment-RD-03-2 | 2027-05-04 → 2027-05-11 (+7d) | 2027-05-06 → 2027-05-13 (+7d) | -72d → -78d |  |
| CO-SL-ES-310 | Install Earthing System Works for Lighting Panel Boards of Street Lighting Network for Alignment-RD-03-2 | 2027-05-08 → 2027-05-20 (+12d) | 2027-05-09 → 2027-05-22 (+13d) | -72d → -78d |  |
| 3 | **Telecom and Light Current Network** | 2027-05-08 → 2027-05-20 (+12d) | 2027-05-11 → 2027-05-24 (+13d) |  |  |
| 1 | **Testing and Finishes** | 2027-05-08 → 2027-05-20 (+12d) | 2027-05-11 → 2027-05-24 (+13d) |  |  |
| CO-TE-CTV-TF-320 | Testing and Interface modules with CCTV, Telephone, MSN and Access Control for Alignment-RD-03-2 | 2027-05-08 → 2027-05-20 (+12d) | 2027-05-11 → 2027-05-24 (+13d) | -84d → -90d |  |
| 4 | **Alignment-RD-03-3** | 2026-11-23 → 2026-11-30 (+7d) | 2027-05-31 → 2027-06-07 (+7d) |  |  |
| EW | **Earthworks** | 2026-11-23 → 2026-11-30 (+7d) | 2026-12-05 → 2026-12-12 (+7d) |  |  |
| EW | **Earthworks** | 2026-11-23 → 2026-11-30 (+7d) | 2026-12-05 → 2026-12-12 (+7d) |  |  |
| CO-EW-230 | Excavation and Backfilling Works Upto Design Level for Earthworks for Alignment-RD-03-3 | 2026-11-23 → 2026-11-30 (+7d) | 2026-12-05 → 2026-12-12 (+7d) | -115d → -121d |  |
| SD | **Storm Drainage Network** | 2026-12-23 → 2026-12-30 (+7d) | 2027-01-03 → 2027-01-10 (+7d) |  |  |
| ML | **Main Line Sections** | 2026-12-23 → 2026-12-30 (+7d) | 2027-01-03 → 2027-01-10 (+7d) |  |  |
| CO-SD-ML-200 | Trench Excavation and Bedding Works for Main Lines of Storm Drainage Network for Alignment-RD-03-3 | 2026-12-23 → 2026-12-30 (+7d) | 2026-12-26 → 2027-01-02 (+7d) | -111d → -117d |  |
| CO-SD-ML-210 | Pipes Laying Works for Main Lines of Storm Drainage Network for Alignment-RD-03-3 | 2026-12-27 → 2027-01-03 (+7d) | 2026-12-29 → 2027-01-05 (+7d) | -111d → -117d | resources Depth Between 0m to 1.50m; Depth Between 1.50m to 2.50m; Depth Between 2.50m to 3.50m; Depth Between 3.50m to 4.50m; Depth > 4.50m; Depth > 3.50m; GRP Pipe, 900mm diameter with Depth Between 3.51m to 4.50m; Skilled Labor [48 h]; Unskilled Labor [24 h]; Plumber [24 h]; Excavator [24 h]; Depth Between 1.50m to 2.50m [79.15] → Skilled Labor [48 h]; Unskilled Labor [24 h]; Plumber [24 h]; Excavator [24 h]; Depth Between 0m to 1.50m; Depth Between 1.50m to 2.50m; Depth Between 2.50m to 3.50m; Depth > 3.50m; Depth Between 1.50m to 2.50m [79.15]; Depth Between 3.50m to 4.50m; Depth > 4.50m; GRP Pipe, 900mm diameter with Depth Between 3.51m to 4.50m |
| CO-SD-ML-220 | Trench Backfilling and Compaction Works for Main Lines of Storm Drainage Network for Alignment-RD-03-3 | 2026-12-31 → 2027-01-07 (+7d) | 2027-01-03 → 2027-01-10 (+7d) | -112d → -118d |  |
| TSE | **Treated Sewage Effluent (Tse)** | 2027-01-04 → 2027-01-11 (+7d) | 2027-02-10 → 2027-02-17 (+7d) |  |  |
| CO-TSE-ML-300 | Trench Excavation and Bedding Works for Main Lines of Treated Sewage Effluent (Tse) for Alignment-RD-03-3 | 2027-01-04 → 2027-01-11 (+7d) | 2027-01-16 → 2027-01-23 (+7d) | -87d → -93d |  |
| CO-TSE-ML-310 | Pipes Laying Works for Main Lines of Treated Sewage Effluent (Tse) for Alignment-RD-03-3 | 2027-01-17 → 2027-01-24 (+7d) | 2027-01-28 → 2027-02-04 (+7d) | -87d → -93d |  |
| CO-TSE-ML-330 | Trench Backfilling and Compaction Works for Treated Sewage Effluent (Tse) for Alignment-RD-03-3 | 2027-01-30 → 2027-02-06 (+7d) | 2027-02-10 → 2027-02-17 (+7d) | -87d → -93d |  |
| PW | **Potable Water Network** | 2027-02-11 → 2027-02-18 (+7d) | 2027-03-23 → 2027-03-30 (+7d) |  |  |
| ML | **Main Line Sections** | 2027-02-11 → 2027-02-18 (+7d) | 2027-03-21 → 2027-03-28 (+7d) |  |  |
| CO-PW-ML-200 | Trench Excavation and Bedding Works for Main Lines of Potable Water Network for Alignment-RD-03-3 | 2027-02-11 → 2027-02-18 (+7d) | 2027-02-22 → 2027-03-01 (+7d) | -87d → -93d |  |
| CO-PW-ML-210 | Pipes Laying and accessories for Main Lines of Potable Water Network for Alignment-RD-03-3 | 2027-02-23 → 2027-03-02 (+7d) | 2027-03-06 → 2027-03-16 (+10d) | -87d → -93d |  |
| CO-PW-ML-220 | Trench Backfilling and Compaction Works for Main Lines of Potable Water Network for Alignment-RD-03-3 | 2027-03-07 → 2027-03-17 (+10d) | 2027-03-21 → 2027-03-28 (+7d) | -79d → -85d |  |
| VC | **Valve Chamber** | 2027-02-11 → 2027-02-18 (+7d) | 2027-03-23 → 2027-03-30 (+7d) |  |  |

| ID | Task | Start | Finish | Total float |
| --- | --- | --- | --- | --- |
| CO-PW-VC-290 | Excavation Works for Main Line Valves and Valve Chambers of Potable Water Network for Alignment-RD-03-3 | 2027-02-11 → 2027-02-18 (+7d) | 2027-02-22 → 2027-03-01 (+7d) | -65d → -71d |
| CO-PW-VC210 | Installation of Valve Chambers of Potable Water Network for Alignment-RD-03-3 | 2027-02-23 → 2027-03-02 (+7d) | 2027-03-06 → 2027-03-16 (+10d) | -65d → -71d |
| CO-PW-VC-300 | Installation Works for Valves of Potable Water Network for Alignment-RD-03-3 | 2027-03-07 → 2027-03-17 (+10d) | 2027-03-20 → 2027-03-27 (+7d) | -65d → -71d |
| CO-PW-VC-310 | Backfilling Works for Main Line Valves and Valve Chambers of Potable Water Network for Alignment-RD-03-3 | 2027-03-21 → 2027-03-28 (+7d) | 2027-03-23 → 2027-03-30 (+7d) | -65d → -71d |
| FH | **Fire Hydrant** | 2027-02-23 → 2027-03-02 (+7d) | 2027-03-23 → 2027-03-30 (+7d) |  |
| CO-PW-FH-230 | Excavation Works for Fire Hydrants of Potable Water Network for Alignment-RD-03-3 | 2027-02-23 → 2027-03-02 (+7d) | 2027-03-06 → 2027-03-16 (+10d) | -65d → -71d |
| CO-PW-FH-240 | Installation Works for Fire Hydrant of Potable Water Network for Alignment-RD-03-3 | 2027-03-07 → 2027-03-17 (+10d) | 2027-03-21 → 2027-03-28 (+7d) | -65d → -71d |
| CO-PW-FH-250 | Trench Backfilling and Compaction Works for Fire Hydrants of Potable Water Network for Alignment-RD-03-3 | 2027-03-22 → 2027-03-29 (+7d) | 2027-03-23 → 2027-03-30 (+7d) | -65d → -71d |
| IR | **Irrigation Network** | 2027-02-23 → 2027-03-02 (+7d) | 2027-03-23 → 2027-03-30 (+7d) |  |
| ML | **Main Line Pipes** | 2027-02-23 → 2027-03-02 (+7d) | 2027-03-23 → 2027-03-30 (+7d) |  |
| CO-IR-ML-350 | Trench Excavation and Bedding Works for Main Lines of Irrigation Network for Alignment-RD-03-3 | 2027-02-23 → 2027-03-02 (+7d) | 2027-03-06 → 2027-03-16 (+10d) | -87d → -93d |
| CO-IR-ML-360 | Pipes Laying Works for Main Lines of Irrigation Network for Alignment-RD-03-3 | 2027-03-07 → 2027-03-17 (+10d) | 2027-03-13 → 2027-03-20 (+7d) | -87d → -93d |
| CO-IR-ML-370 | Installation Works for Main Line Valves of Irrigation Network for Alignment-RD-03-3 | 2027-03-14 → 2027-03-21 (+7d) | 2027-03-16 → 2027-03-23 (+7d) | -87d → -93d |
| CO-IR-ML-390 | Installation Works for Bulbblers And Sprinkler and Irrigation Control System of Irrigation Network for Alignment-RD-03-3 | 2027-03-17 → 2027-03-24 (+7d) | 2027-03-20 → 2027-03-27 (+7d) | -87d → -93d |
| CO-IR-ML-380 | Trench Backfilling and Compaction Works for Main Lines of Irrigation Network for Alignment-RD-03-3 | 2027-03-21 → 2027-03-28 (+7d) | 2027-03-23 → 2027-03-30 (+7d) | -87d → -93d |
| MV | **Medium Voltage Network** | 2027-03-22 → 2027-03-29 (+7d) | 2027-03-31 → 2027-04-07 (+7d) |  |
| CW | **Cabling Works** | 2027-03-22 → 2027-03-29 (+7d) | 2027-03-31 → 2027-04-07 (+7d) |  |
| CO-MV-ML-340 | Trench Excavation and Bedding Works for Medium Voltage Network for Alignment-RD-03-3 | 2027-03-22 → 2027-03-29 (+7d) | 2027-03-24 → 2027-03-31 (+7d) | -79d → -85d |
| CO-MV-ML-350 | Duct Laying Works for Medium Voltage Network for Alignment-RD-03-3 | 2027-03-25 → 2027-04-01 (+7d) | 2027-03-28 → 2027-04-04 (+7d) | -79d → -85d |
| CO-MV-ML-360 | Trench Backfilling and Compaction Works for Medium Voltage Network for Alignment-RD-03-3 | 2027-03-29 → 2027-04-05 (+7d) | 2027-03-31 → 2027-04-07 (+7d) | -79d → -85d |
| LV | **Low Voltage Network** | 2027-04-01 → 2027-04-08 (+7d) | 2027-05-03 → 2027-05-10 (+7d) |  |
| MLVC | **Main Low Voltage Cables Works ( Cable 300 MM )** | 2027-04-01 → 2027-04-08 (+7d) | 2027-04-21 → 2027-04-28 (+7d) |  |
| CON-LV-ML-190 | Trench Excavation and Bedding Works for Main Cable of Low Voltage Network for Alignment-RD-03-3 | 2027-04-01 → 2027-04-08 (+7d) | 2027-04-08 → 2027-04-15 (+7d) | -79d → -85d |
| CON-LV-ML-200 | Cable Laying Works for Main Cable of Low Voltage Network for Alignment-RD-03-3 | 2027-04-10 → 2027-04-17 (+7d) | 2027-04-17 → 2027-04-24 (+7d) | -79d → -85d |
| CON-LV-ML-210 | Trench Backfilling and Compaction Works for Main Cable of Low Voltage Network for Alignment-RD-03-3 | 2027-04-18 → 2027-04-25 (+7d) | 2027-04-21 → 2027-04-28 (+7d) | -73d → -79d |
| SLVC | **Service Low Voltage Cables Works ( Cable 70 MM )** | 2027-04-10 → 2027-04-17 (+7d) | 2027-04-28 → 2027-05-05 (+7d) |  |
| CON-LV-HC-190 | Trench Excavation and Bedding Works for Service Cable of Low Voltage Network for Alignment-RD-03-3 | 2027-04-10 → 2027-04-17 (+7d) | 2027-04-17 → 2027-04-24 (+7d) | -79d → -85d |
| CON-LV-HC-200 | Cable Laying Works for Service Cable of Low Voltage Network for Alignment-RD-03-3 | 2027-04-18 → 2027-04-25 (+7d) | 2027-04-25 → 2027-05-02 (+7d) | -79d → -85d |
| CON-LV-HC-210 | Trench Backfilling and Compaction Works for Service Cable of Low Voltage Network for Alignment-RD-03-3 | 2027-04-26 → 2027-05-03 (+7d) | 2027-04-28 → 2027-05-05 (+7d) | -79d → -85d |
| DP | **Distribution Pillars Works** | 2027-04-29 → 2027-05-06 (+7d) | 2027-05-03 → 2027-05-10 (+7d) |  |
| CON-LV-DP-190 | Installation Works for Distribution Pillar Units of Low Voltage Network for Alignment-RD-03-3 | 2027-04-29 → 2027-05-06 (+7d) | 2027-05-03 → 2027-05-10 (+7d) | -75d → -81d |
| SL | **Street Lighting Network** | 2027-04-01 → 2027-04-08 (+7d) | 2027-04-21 → 2027-04-28 (+7d) |  |
| LP | **Lighting Poles Works** | 2027-04-01 → 2027-04-08 (+7d) | 2027-04-21 → 2027-04-28 (+7d) |  |
| CO-SL-LP-450 | Installation Works for Lighting Poles Foundation of Street Lighting Network for Alignment-RD-03-3 | 2027-04-01 → 2027-04-08 (+7d) | 2027-04-07 → 2027-04-14 (+7d) | -77d → -83d |
| CO-SL-LP-460 | Installation Works for Lighting Poles of Street Lighting Network for Alignment-RD-03-3 | 2027-04-08 → 2027-04-15 (+7d) | 2027-04-14 → 2027-04-21 (+7d) | -77d → -83d |
| CO-SL-LP-480 | Backfilling Works for Lighting Poles of Street Lighting Network for Alignment-RD-03-3 | 2027-04-15 → 2027-04-22 (+7d) | 2027-04-21 → 2027-04-28 (+7d) | -77d → -83d |
| CW | **Cabling Works** | 2027-04-15 → 2027-04-22 (+7d) | 2027-04-21 → 2027-04-28 (+7d) |  |
| CO-SL-CL-350 | Cable Laying Works for Street Lighting Network for Alignment-RD-03-3 | 2027-04-15 → 2027-04-22 (+7d) | 2027-04-21 → 2027-04-28 (+7d) | -77d → -83d |
| CO-SL-CL-360 | Trench Backfilling and Compaction Works for Street Lighting Network for Alignment-RD-03-3 | 2027-04-15 → 2027-04-22 (+7d) | 2027-04-21 → 2027-04-28 (+7d) | -77d → -83d |
| TE | **Telecom and Light Current Network** | 2027-04-13 → 2027-04-20 (+7d) | 2027-05-10 → 2027-05-23 (+13d) |  |
| PD | **Ducts Works** | 2027-04-29 → 2027-05-06 (+7d) | 2027-05-10 → 2027-05-23 (+13d) |  |
| CO-TE-DW-230 | Pipes Laying Works for Ducts of Telecom Network for Alignment-RD-03-3 | 2027-04-29 → 2027-05-06 (+7d) | 2027-05-05 → 2027-05-12 (+7d) | -79d → -85d |
| CO-TE-DW-240 | Trench Backfilling and Compaction Works for Ducts of Telecom Network for Alignment-RD-03-3 | 2027-05-06 → 2027-05-13 (+7d) | 2027-05-10 → 2027-05-23 (+13d) | -79d → -85d |
| MH | **Manholes Works** | 2027-04-13 → 2027-04-20 (+7d) | 2027-04-21 → 2027-04-28 (+7d) |  |
| CO-TE-MH-230 | Excavation Works for Manholes of Telecom Network for Alignment-RD-03-3 | 2027-04-13 → 2027-04-20 (+7d) | 2027-04-14 → 2027-04-21 (+7d) | -78d → -84d |
| CO-TE-MH-240 | Installation Works for Manholes of Telecom Network for Alignment-RD-03-3 | 2027-04-15 → 2027-04-22 (+7d) | 2027-04-18 → 2027-04-25 (+7d) | -78d → -84d |
| CO-TE-MH-250 | Backfilling Works for Manholes of Telecom Network for Alignment-RD-03-3 | 2027-04-19 → 2027-04-26 (+7d) | 2027-04-21 → 2027-04-28 (+7d) | -78d → -84d |
| DD | **CCTV, Telephone, MSN, ACs System Works** | 2027-04-22 → 2027-04-29 (+7d) | 2027-04-25 → 2027-05-02 (+7d) |  |
| CO-TE-CTV-210 | Installation of CCTV, Telephone, ACS and MSN Systems Cables for Alignment-RD-03-3 | 2027-04-22 → 2027-04-29 (+7d) | 2027-04-25 → 2027-05-02 (+7d) | -78d → -84d |
| RD | **Road Works** | 2027-05-11 → 2027-05-24 (+13d) | 2027-05-27 → 2027-06-03 (+7d) |  |
| LS | **Pavement Works** | 2027-05-11 → 2027-05-24 (+13d) | 2027-05-20 → 2027-05-27 (+7d) |  |
| CO-RD-PV-220 | Fixing of Curbstone for Sidewalks Pavement for Alignment-RD-03-3 | 2027-05-11 → 2027-05-24 (+13d) | 2027-05-20 → 2027-05-27 (+7d) | -81d → -87d |
| CO-RD-PV-230 | Fixing of Interlock Tiles for Sidewalks Pavement for Alignment-RD-03-3 | 2027-05-11 → 2027-05-24 (+13d) | 2027-05-20 → 2027-05-27 (+7d) | -81d → -87d |
| TS | **Traffic Signs Boards and Roads Marking** | 2027-05-11 → 2027-05-24 (+13d) | 2027-05-27 → 2027-06-03 (+7d) |  |
| CO-RD-F-RM-210 | Application of Road Marking Works For Road Works for Alignment-RD-03-3 | 2027-05-11 → 2027-05-24 (+13d) | 2027-05-13 → 2027-05-26 (+13d) | -81d → -87d |
| CO-RD-F-TS-150 | Installation Works of Traffic Signs Boards For Road Works for Alignment-RD-03-3 | 2027-05-24 → 2027-05-31 (+7d) | 2027-05-27 → 2027-06-03 (+7d) | -84d → -90d |
| 3 | **Finishes for Infrastructure Networks** | 2027-04-01 → 2027-04-08 (+7d) | 2027-05-31 → 2027-06-07 (+7d) |  |
| 11 | **Storm Drainage Network** | 2027-05-26 → 2027-06-02 (+7d) | 2027-05-31 → 2027-06-07 (+7d) |  |
| TF | **Testing and Finishes** | 2027-05-26 → 2027-06-02 (+7d) | 2027-05-31 → 2027-06-07 (+7d) |  |
| CO-SD-ML-TF-130 | Testing Work for Pipes of Storm Drainage Network for Alignment-RD-03-3 | 2027-05-26 → 2027-06-02 (+7d) | 2027-05-31 → 2027-06-07 (+7d) | -106d → -112d |
| 9 | **Potable Water Network** | 2027-04-26 → 2027-05-03 (+7d) | 2027-05-03 → 2027-05-10 (+7d) |  |
| TF | **Testing and Finishes** | 2027-04-26 → 2027-05-03 (+7d) | 2027-05-03 → 2027-05-10 (+7d) |  |
| CO-PW-TF-200 | Fire Hydrant Finishies (S.Box + Safety + Marker Post ) of Potable Water Network for Alignment-RD-03-3 | 2027-04-26 → 2027-05-03 (+7d) | 2027-04-28 → 2027-05-05 (+7d) | -90d → -96d |
| CO-PW-TF-190 | Testing of Potable Water Network for Alignment-RD-03-3 | 2027-04-29 → 2027-05-06 (+7d) | 2027-05-02 → 2027-05-09 (+7d) | -78d → -84d |
| CO-PW-TF-210 | Final Finishes works and Covers for Valves and Valve Chambers for Alignment-RD-03-3 | 2027-04-29 → 2027-05-06 (+7d) | 2027-05-03 → 2027-05-10 (+7d) | -83d → -89d |
| 1 | **Treated Sewage Effluent (Tse)** | 2027-05-22 → 2027-05-29 (+7d) | 2027-05-27 → 2027-06-03 (+7d) |  |
| TF | **Testing and Finishes** | 2027-05-22 → 2027-05-29 (+7d) | 2027-05-27 → 2027-06-03 (+7d) |  |
| CO-TSE-TF-200 | Final Testing (pressure tests) of Treated Sewage Effluent (Tse) for Alignment-RD-03-3 | 2027-05-22 → 2027-05-29 (+7d) | 2027-05-27 → 2027-06-03 (+7d) | -89d → -95d |
| 13 | **Irrigation Network** | 2027-04-29 → 2027-05-06 (+7d) | 2027-05-05 → 2027-05-12 (+7d) |  |
| TF | **Testing and Finishes** | 2027-04-29 → 2027-05-06 (+7d) | 2027-05-05 → 2027-05-12 (+7d) |  |

| ID | Task | Start | Finish | Complete | Total float |
| --- | --- | --- | --- | --- | --- |
| CO-IR-TF-210 | Final Testing (pressure tests) of Irrigation Network for Alignment-RD-03-3 | 2027-04-29 → 2027-05-06 (+7d) | 2027-05-05 → 2027-05-12 (+7d) |  | -75d → -81d |
| 14 | **Medium Voltage Network** | 2027-04-01 → 2027-04-08 (+7d) | 2027-04-07 → 2027-04-14 (+7d) |  |  |
| TT | **Termination and Testing Works** | 2027-04-01 → 2027-04-08 (+7d) | 2027-04-07 → 2027-04-14 (+7d) |  |  |
| CO-MV-TF-250 | Testing and Termination Works of Medium Voltage Network for Alignment-RD-03-3 | 2027-04-01 → 2027-04-08 (+7d) | 2027-04-07 → 2027-04-14 (+7d) |  | -72d → -78d |
| 6 | **Low Voltage Network** | 2027-05-04 → 2027-05-11 (+7d) | 2027-05-10 → 2027-05-23 (+13d) |  |  |
| TT | **Termination and Testing Works** | 2027-05-04 → 2027-05-11 (+7d) | 2027-05-10 → 2027-05-23 (+13d) |  |  |
| CON-LV-TT-160 | Testing and Termination Works for Substation Low Voltage Panel Boards of Low Voltage Network for Alignment-RD-03-3 | 2027-05-04 → 2027-05-11 (+7d) | 2027-05-10 → 2027-05-23 (+13d) |  | -73d → -79d |
| 12 | **Street Lighting Network** | 2027-05-03 → 2027-05-10 (+7d) | 2027-05-30 → 2027-06-06 (+7d) |  |  |
| TR | **Termination and Testing Works** | 2027-05-03 → 2027-05-10 (+7d) | 2027-05-30 → 2027-06-06 (+7d) |  |  |
| CO-SL-LP-470 | Installation Works for Lighting Fixtures With Drop Wire of Street Lighting Network for Alignment-RD-03-3 | 2027-05-03 → 2027-05-10 (+7d) | 2027-05-09 → 2027-05-22 (+13d) |  | -86d → -92d |
| CO-SL-TF-490 | Testing Works for Lighting Poles of Street Lighting Network for Alignment-RD-03-3 | 2027-05-24 → 2027-05-31 (+7d) | 2027-05-30 → 2027-06-06 (+7d) |  | -85d → -91d |
| ES | **Earthing System Works** | 2027-05-04 → 2027-05-11 (+7d) | 2027-05-22 → 2027-05-29 (+7d) |  |  |
| CO-SL-ES-280 | Install Earthing System Works for Lighting Poles of Street Lighting Network for Alignment-RD-03-3 | 2027-05-04 → 2027-05-11 (+7d) | 2027-05-10 → 2027-05-23 (+13d) |  | -87d → -93d |
| CO-SL-ES-290 | Install Earthing System Works for Lighting Panel Boards of Street Lighting Network for Alignment-RD-03-3 | 2027-05-10 → 2027-05-23 (+13d) | 2027-05-22 → 2027-05-29 (+7d) |  | -86d → -92d |
| 3 | **Telecom and Light Current Network** | 2027-04-29 → 2027-05-06 (+7d) | 2027-05-12 → 2027-05-25 (+13d) |  |  |
| 1 | **Testing and Finishes** | 2027-04-29 → 2027-05-06 (+7d) | 2027-05-12 → 2027-05-25 (+13d) |  |  |
| CO-TE-CTV-TF-260 | Testing and Interface modules with Telecom for Alignment-RD-03-3 | 2027-04-29 → 2027-05-06 (+7d) | 2027-05-05 → 2027-05-12 (+7d) |  | -81d → -87d |
| CO-TE-CTV-TF-340 | Testing and Interface modules with CCTV, Telephone, MSN and Access Control for Alignment-RD-03-3 | 2027-05-06 → 2027-05-13 (+7d) | 2027-05-12 → 2027-05-25 (+13d) |  | -81d → -87d |
| EX | **External** |  | 2027-05-26 → 2027-06-02 (+7d) |  |  |
| 2 | **External Road - 1 - 1** |  | 2027-05-22 → 2027-05-29 (+7d) |  |  |
| EW | **Earthworks** |  | 2026-12-15 → 2026-12-22 (+7d) |  |  |
| EW | **Earthworks** |  | 2026-12-15 → 2026-12-22 (+7d) |  |  |
| CO-EW-250_R | Excavation and Backfilling Works Upto Design Level for Earthworks for External Road - 1 - 1(Remaining) | 2026-12-07 → 2026-12-14 (+7d) | 2026-12-15 → 2026-12-22 (+7d) |  | -43d → -49d |
| RD | **Road Works** |  | 2027-05-22 → 2027-05-29 (+7d) |  |  |
| 3 | **Road 01** |  | 2027-05-22 → 2027-05-29 (+7d) |  |  |
| RD | **Pre-Bituminous Construction** |  | 2027-04-15 → 2027-04-22 (+7d) |  |  |
| CO-RD-PB-240 | Subgrade Layer for Road Works for External Road - 1 - 1 |  | 2027-04-05 → 2027-04-12 (+7d) |  | -74d → -80d |
| CO-RD-PB-250 | Aggregate Base Course Layer for Road Works for External Road - 1 - 1 |  | 2027-04-15 → 2027-04-22 (+7d) |  | -74d → -80d |
| 1 | **Bituminous Construction** | 2027-04-17 → 2026-11-15 (-153d) | 2027-04-25 → 2027-05-02 (+7d) |  |  |
| CO-RD-B-260 | Bituminous Base Courses Layers for Road Works for External Road - 1 - 1 | 2027-04-17 → 2026-11-15 A (-153d) | 2027-04-20 → 2027-04-27 (+7d) | 0% → 42% | -74d → -80d |
| CON-RD-MR-250 | Preparation of Asphaltic Wearing Course Layer for Roads Network for External Road - 1 - 1 | 2027-04-21 → 2027-04-28 (+7d) | 2027-04-25 → 2027-05-02 (+7d) |  | -65d → -71d |
| LS | **Pavement Works** | 2027-04-21 → 2027-04-28 (+7d) | 2027-05-06 → 2027-05-13 (+7d) |  |  |
| CO-RD-PV-260 | Fixing of Curbstone for Sidewalks Pavement for External Road - 1 - 1 | 2027-04-21 → 2027-04-28 (+7d) | 2027-04-29 → 2027-05-06 (+7d) |  | -74d → -80d |
| CO-RD-PV-270 | Fixing of Interlock Tiles for Sidewalks Pavement for External Road - 1 - 1 | 2027-05-01 → 2027-05-08 (+7d) | 2027-05-06 → 2027-05-13 (+7d) |  | -74d → -80d |
| TS | **Traffic Signs Boards and Roads Marking** | 2027-05-08 → 2027-05-20 (+12d) | 2027-05-22 → 2027-05-29 (+7d) |  |  |
| CO-RD-F-RM-230 | Application of Road Marking Works For Road Works for External Road - 1 - 1 | 2027-05-08 → 2027-05-20 (+12d) | 2027-05-09 → 2027-05-22 (+13d) |  | -74d → -80d |
| CO-RD-F-TS-170 | Installation Works of Traffic Signs Boards For Road Works for External Road - 1 - 1 | 2027-05-22 → 2027-05-29 (+7d) | 2027-05-22 → 2027-05-29 (+7d) |  | -79d → -85d |
| 4 | **External Road - 1 - 2** |  | 2027-05-24 → 2027-05-31 (+7d) |  |  |
| EW | **Earthworks** |  | 2027-01-05 → 2027-01-12 (+7d) |  |  |
| EW | **Earthworks** |  | 2027-01-05 → 2027-01-12 (+7d) |  |  |
| CO-EW-280_R | Excavation and Backfilling Works Upto Design Level for Earthworks for External Road - 1 - 2(Remaining) |  | 2027-01-05 → 2027-01-12 (+7d) |  | -43d → -49d |
| RD | **Road Works** | 2027-03-28 → 2027-04-04 (+7d) | 2027-05-24 → 2027-05-31 (+7d) |  |  |
| 3 | **Road 01** | 2027-03-28 → 2027-04-04 (+7d) | 2027-05-24 → 2027-05-31 (+7d) |  |  |
| RD | **Pre-Bituminous Construction** | 2027-03-28 → 2027-04-04 (+7d) | 2027-04-10 → 2027-04-17 (+7d) |  |  |
| CO-RD-PB-300 | Subgrade Layer for Road Works for External Road - 1 - 2 | 2027-03-28 → 2027-04-04 (+7d) | 2027-04-03 → 2027-04-10 (+7d) |  | -74d → -80d |
| CO-RD-PB-310 | Aggregate Base Course Layer for Road Works for External Road - 1 - 2 | 2027-04-04 → 2027-04-11 (+7d) | 2027-04-10 → 2027-04-17 (+7d) |  | -74d → -80d |
| 1 | **Bituminous Construction** | 2027-04-11 → 2027-04-18 (+7d) | 2027-04-22 → 2027-04-29 (+7d) |  |  |
| CO-RD-B-320 | Bituminous Base Courses Layers for Road Works for External Road - 1 - 2 | 2027-04-11 → 2027-04-18 (+7d) | 2027-04-18 → 2027-04-25 (+7d) |  | -74d → -80d |
| CON-RD-MR-310 | Preparation of Asphaltic Wearing Course Layer for Roads Network for External Road - 1 - 2 | 2027-04-19 → 2027-04-26 (+7d) | 2027-04-22 → 2027-04-29 (+7d) |  | -66d → -72d |
| LS | **Pavement Works** | 2027-04-19 → 2027-04-26 (+7d) | 2027-05-02 → 2027-05-09 (+7d) |  |  |
| CO-RD-PV-320 | Fixing of Curbstone for Sidewalks Pavement for External Road - 1 - 2 | 2027-04-19 → 2027-04-26 (+7d) | 2027-04-25 → 2027-05-02 (+7d) |  | -74d → -80d |
| CO-RD-PV-330 | Fixing of Interlock Tiles for Sidewalks Pavement for External Road - 1 - 2 | 2027-04-26 → 2027-05-03 (+7d) | 2027-05-02 → 2027-05-09 (+7d) |  | -74d → -80d |
| TS | **Traffic Signs Boards and Roads Marking** | 2027-05-03 → 2027-05-10 (+7d) | 2027-05-24 → 2027-05-31 (+7d) |  |  |
| CO-RD-F-RM-260 | Application of Road Marking Works For Road Works for External Road - 1 - 2 | 2027-05-03 → 2027-05-10 (+7d) | 2027-05-06 → 2027-05-13 (+7d) |  | -74d → -80d |
| CO-RD-F-TS-200 | Installation Works of Traffic Signs Boards For Road Works for External Road - 1 - 2 | 2027-05-22 → 2027-05-29 (+7d) | 2027-05-24 → 2027-05-31 (+7d) |  | -81d → -87d |
| 1 | **External Road - 2** |  | 2027-05-23 → 2027-05-30 (+7d) |  |  |
| EW | **Earthworks** |  | 2027-02-14 → 2027-02-21 (+7d) |  |  |
| EW | **Earthworks** |  | 2027-02-14 → 2027-02-21 (+7d) |  |  |
| CO-EW-260_R | Excavation and Backfilling Works Upto Design Level for Earthworks for External Road - 2(Remaining) | 2027-01-21 → 2027-01-28 (+7d) | 2027-02-14 → 2027-02-21 (+7d) |  | -56d → -62d |
| RD | **Road Works** |  | 2027-05-23 → 2027-05-30 (+7d) |  |  |
| 3 | **Road 01** |  | 2027-05-23 → 2027-05-30 (+7d) |  |  |
| RD | **Pre-Bituminous Construction** |  | 2027-03-28 → 2027-04-04 (+7d) |  |  |
| CO-RD-PB-260 | Subgrade Layer for Road Works for External Road - 2 |  | 2027-03-28 → 2027-04-04 (+7d) |  | -75d → -81d |
| CO-RD-PB-270 | Aggregate Base Course Layer for Road Works for External Road - 2 |  | 2027-03-28 → 2027-04-04 (+7d) |  | -75d → -81d |
| 1 | **Bituminous Construction** | 2027-03-29 → 2027-04-05 (+7d) | 2027-04-20 → 2027-04-27 (+7d) |  |  |
| CO-RD-B-280 | Bituminous Base Courses Layers for Road Works for External Road - 2 | 2027-03-29 → 2027-04-05 (+7d) | 2027-04-08 → 2027-04-15 (+7d) |  | -75d → -81d |
| CON-RD-MR-270 | Preparation of Asphaltic Wearing Course Layer for Roads Network for External Road - 2 | 2027-04-10 → 2027-04-17 (+7d) | 2027-04-20 → 2027-04-27 (+7d) |  | -73d → -79d |
| LS | **Pavement Works** | 2027-04-10 → 2027-04-17 (+7d) | 2027-04-19 → 2027-04-26 (+7d) |  |  |
| CO-RD-PV-280 | Fixing of Curbstone for Sidewalks Pavement for External Road - 2 | 2027-04-10 → 2027-04-17 (+7d) | 2027-04-19 → 2027-04-26 (+7d) |  | -66d → -72d |
| CO-RD-PV-290 | Fixing of Interlock Tiles for Sidewalks Pavement for External Road - 2 | 2027-04-10 → 2027-04-17 (+7d) | 2027-04-19 → 2027-04-26 (+7d) |  | -66d → -72d |

| ID | Task | Start | Finish | Complete | Total float |
| --- | --- | --- | --- | --- | --- |
| TS | **Traffic Signs Boards and Roads Marking** | 2027-05-03 → 2027-05-10 (+7d) | 2027-05-23 → 2027-05-30 (+7d) |  |  |
| CO-RD-F-RM-240 | Application of Road Marking Works For Road Works for External Road - 2 | 2027-05-03 → 2027-05-10 (+7d) | 2027-05-13 → 2027-05-26 (+13d) |  | -77d → -83d |
| CO-RD-F-TS-180 | Installation Works of Traffic Signs Boards For Road Works for External Road - 2 | 2027-05-22 → 2027-05-29 (+7d) | 2027-05-23 → 2027-05-30 (+7d) |  | -83d → -89d |
| 3 | **External Road - 3** |  | 2027-05-26 → 2027-06-02 (+7d) |  |  |
| EW | **Earthworks** |  | 2027-02-22 → 2027-03-01 (+7d) |  |  |
| EW | **Earthworks** |  | 2027-02-22 → 2027-03-01 (+7d) |  |  |
| CO-EW-270_R | Excavation and Backfilling Works Upto Design Level for Earthworks for External Road - 3(Remaining) |  | 2027-02-22 → 2027-03-01 (+7d) |  | -56d → -62d |
| TE | **Telecom and Light Current Network** | 2027-02-02 → 2027-02-09 (+7d) | 2027-03-27 → 2027-04-03 (+7d) |  |  |
| MH | **Manholes Works** | 2027-02-02 → 2027-02-09 (+7d) | 2027-03-20 → 2027-03-27 (+7d) |  |  |
| CO-TE-MH-290 | Excavation Works for Manholes of Telecom Network for External Road - 3 | 2027-02-02 → 2027-02-09 (+7d) | 2027-02-22 → 2027-03-01 (+7d) |  | -75d → -81d |
| CO-TE-MH-300 | Installation Works for Manholes of Telecom Network for External Road - 3 | 2027-02-23 → 2027-03-02 (+7d) | 2027-03-20 → 2027-03-27 (+7d) |  | -75d → -81d |
| CO-TE-MH-310 | Backfilling Works for Manholes of Telecom Network for External Road - 3 | 2027-03-14 → 2027-03-21 (+7d) | 2027-03-20 → 2027-03-27 (+7d) |  | -75d → -81d |
| 1 | **Testing and Finishes** | 2027-03-21 → 2027-03-28 (+7d) | 2027-03-27 → 2027-04-03 (+7d) |  |  |
| CO-TE-CTV-TF-360 | Testing and Interface modules with Telecom for External Road - 3 | 2027-03-21 → 2027-03-28 (+7d) | 2027-03-27 → 2027-04-03 (+7d) |  | -75d → -81d |
| RD | **Road Works** |  | 2027-05-26 → 2027-06-02 (+7d) |  |  |
| 3 | **Road 01** |  | 2027-05-26 → 2027-06-02 (+7d) |  |  |
| RD | **Pre-Bituminous Construction** |  | 2027-04-05 → 2027-04-12 (+7d) |  |  |
| CO-RD-PB-280 | Subgrade Layer for Road Works for External Road - 3 |  | 2027-03-27 → 2027-04-03 (+7d) |  | -74d → -80d |
| CO-RD-PB-290 | Aggregate Base Course Layer for Road Works for External Road - 3 |  | 2027-04-05 → 2027-04-12 (+7d) |  | -72d → -78d |
| 1 | **Bituminous Construction** | 2027-04-10 → 2027-04-17 (+7d) | 2027-05-05 → 2027-05-12 (+7d) |  |  |
| CO-RD-B-300 | Bituminous Base Courses Layers for Road Works for External Road - 3 | 2027-04-10 → 2027-04-17 (+7d) | 2027-04-22 → 2027-04-29 (+7d) |  | -75d → -81d |
| CON-RD-MR-290 | Preparation of Asphaltic Wearing Course Layer for Roads Network for External Road - 3 | 2027-04-24 → 2027-05-01 (+7d) | 2027-05-05 → 2027-05-12 (+7d) |  | -75d → -81d |
| LS | **Pavement Works** | 2027-04-24 → 2027-05-01 (+7d) | 2027-04-26 → 2027-05-03 (+7d) |  |  |
| CO-RD-PV-300 | Fixing of Curbstone for Sidewalks Pavement for External Road - 3 | 2027-04-24 → 2027-05-01 (+7d) | 2027-04-26 → 2027-05-03 (+7d) |  | -67d → -73d |
| CO-RD-PV-310 | Fixing of Interlock Tiles for Sidewalks Pavement for External Road - 3 | 2027-04-24 → 2027-05-01 (+7d) | 2027-04-26 → 2027-05-03 (+7d) |  | -64d → -70d |
| TS | **Traffic Signs Boards and Roads Marking** | 2027-05-06 → 2027-05-13 (+7d) | 2027-05-26 → 2027-06-02 (+7d) |  |  |
| CO-RD-F-RM-250 | Application of Road Marking Works For Road Works for External Road - 3 | 2027-05-06 → 2027-05-13 (+7d) | 2027-05-11 → 2027-05-24 (+13d) |  | -75d → -81d |
| CO-RD-F-TS-190 | Installation Works of Traffic Signs Boards For Road Works for External Road - 3 | 2027-05-24 → 2027-05-31 (+7d) | 2027-05-26 → 2027-06-02 (+7d) |  | -83d → -89d |
| GEN | **Superstructure Work** |  | 2027-06-24 → 2027-07-01 (+7d) |  |  |
| 4 | **Utility Buildings** |  | 2027-06-24 → 2027-07-01 (+7d) |  |  |
| 4 | **Water Pump Station** |  | 2027-06-24 → 2027-07-01 (+7d) |  |  |
| 1 | **Civil work** |  | 2026-12-01 → 2026-12-03 (+2d) |  |  |
| 1 | **SubStructure** |  | 2026-11-21 → 2026-11-15 (-6d) |  |  |
| CO-UB-PS-160 | Backfilling and compaction work for pump station | 2026-11-17 → 2026-11-10 A (-7d) | 2026-11-21 → 2026-11-15 A (-6d) | 0% → 100% | -53d → none |
| 2 | **Super structure** |  | 2026-12-01 → 2026-12-03 (+2d) |  |  |
| CO-UB-PS-240 | pouring for pump roof | 2026-11-22 → 2026-11-24 (+2d) | 2026-11-23 → 2026-11-25 (+2d) |  | -53d → -55d |
| CO-UB-PS-250 | curing and deshuttering formwork for pump roof | 2026-11-24 → 2026-11-26 (+2d) | 2026-12-01 → 2026-12-03 (+2d) |  | -53d → -55d |
| 2 | **Architectural work** | 2026-12-02 → 2026-12-05 (+3d) | 2027-01-05 → 2027-01-07 (+2d) |  |  |
| CO-UB-PS-260 | Executing Masonry Works for Water Pump station building | 2026-12-02 → 2026-12-05 (+3d) | 2026-12-09 → 2026-12-12 (+3d) |  | -53d → -55d |
| CO-UB-PS-270 | Executing Plastering Works for Pump station building | 2026-12-10 → 2026-12-13 (+3d) | 2026-12-17 → 2026-12-20 (+3d) |  | -53d → -55d |
| CO-UB-PS-280 | Executing Painting and Finishes Works for Pump station building | 2026-12-19 → 2026-12-21 (+2d) | 2026-12-27 → 2026-12-29 (+2d) |  | -53d → -55d |
| CO-UB-PS-320 | Doors and windows Fixing &Stair Tiles | 2026-12-28 → 2026-12-30 (+2d) | 2027-01-05 → 2027-01-07 (+2d) |  | -53d → -55d |
| 4 | **Mechanical work** | 2027-01-14 → 2027-01-21 (+7d) | 2027-06-24 → 2027-07-01 (+7d) |  |  |
| CO-UB-PS-340 | Executing HVAC System for Water Pump station building | 2027-01-14 → 2027-01-21 (+7d) | 2027-01-25 → 2027-02-01 (+7d) |  | -12d → -18d |
| CO-UB-PS-360 | Executing Fire fighting institution works(piping and wire installation) for Water Pump station building | 2027-05-26 → 2027-06-02 (+7d) | 2027-06-06 → 2027-06-13 (+7d) |  | -107d → -113d |
| CO-UB-PS-380 | Executing Plummbing works for Water Pump station building | 2027-06-07 → 2027-06-14 (+7d) | 2027-06-17 → 2027-06-24 (+7d) |  | -107d → -113d |
| CO-UB-PS-390 | Installation of pumps | 2027-06-19 → 2027-06-26 (+7d) | 2027-06-24 → 2027-07-01 (+7d) |  | -107d → -113d |
| 3 | **Sewage Lift Station** |  | 2027-01-14 → 2027-01-17 (+3d) |  |  |
| 1 | **Civil work** |  | 2027-01-11 → 2027-01-13 (+2d) |  |  |
| 2 | **Super structure** |  | 2027-01-11 → 2027-01-13 (+2d) |  |  |
| CO-UB-LS-360 | pouring for pump roof |  | 2026-12-28 → 2026-12-30 (+2d) |  | 42d → 40d |
| CO-UB-LS-370 | curing and deshuttering formwork for pump roof | 2026-12-29 → 2026-12-31 (+2d) | 2027-01-11 → 2027-01-13 (+2d) |  | 42d → 40d |
| 2 | **Architectural work** | 2027-01-12 → 2027-01-14 (+2d) | 2027-01-14 → 2027-01-17 (+3d) |  |  |
| CO-UB-LS-390 | Executing Plastering and Finishes Works for Sewage Lift Station | 2027-01-12 → 2027-01-14 (+2d) | 2027-01-14 → 2027-01-17 (+3d) |  | 42d → 40d |
| 5 | **Potable Water Tank** | 2026-12-19 → 2026-10-13 (-67d) | 2027-03-21 → 2027-03-14 (-7d) |  |  |
| 1 | **Eearth Work** | 2026-12-19 → 2026-10-13 (-67d) | 2027-01-12 → 2027-01-05 (-7d) |  |  |
| CO-UB-PWT-100 | Excavation work for tank foundation tank formation level for Potable Water Tank | 2026-12-19 → 2026-10-13 A (-67d) | 2026-12-31 → 2026-11-15 A (-46d) | 0% → 100% | -27d → none |
| CO-UB-PWT-110 | Soil replacement Up to tank formation level for Potable Water Tank | 2027-01-02 → 2026-12-26 (-7d) | 2027-01-12 → 2027-01-05 (-7d) |  | -27d → -21d |
| 2 | **Structural Work** | 2027-01-13 → 2027-01-06 (-7d) | 2027-03-01 → 2027-02-22 (-7d) |  |  |
| CO-UB-PWT-120 | Plain Concrete works for Potable Water Tank | 2027-01-13 → 2027-01-06 (-7d) | 2027-01-20 → 2027-01-13 (-7d) |  | -27d → -21d |
| CO-UB-PWT-130 | Form work for Tank Foundation for Potable Water Tank | 2027-01-21 → 2027-01-14 (-7d) | 2027-02-03 → 2027-01-27 (-7d) |  | -27d → -21d |
| CO-UB-PWT-140 | Steel Reinforcement work for Tank Foundation for Potable Water Tank | 2027-02-04 → 2027-01-28 (-7d) | 2027-02-17 → 2027-02-10 (-7d) |  | -27d → -21d |
| CO-UB-PWT-150 | Casting concrete for Tank Foundation for Potable Water Tank | 2027-02-18 → 2027-02-11 (-7d) | 2027-03-01 → 2027-02-22 (-7d) |  | -27d → -21d |
| 3 | **Tank Shell Erection&Roof Installation** | 2027-03-02 → 2027-02-23 (-7d) | 2027-03-21 → 2027-03-14 (-7d) |  |  |
| CO-UB-PWT-170 | shell erection for Potable Water Tank | 2027-03-02 → 2027-02-23 (-7d) | 2027-03-21 → 2027-03-14 (-7d) |  | -27d → -21d |
| 2 | **IrrigationTank** | 2027-01-02 → 2026-11-10 (-53d) | 2027-03-20 → 2027-02-23 (-25d) |  |  |
| 1 | **Eearth Work** | 2027-01-02 → 2026-11-10 (-53d) | 2027-01-26 → 2027-01-05 (-21d) |  |  |
| CO-UB-IRT-140 | Excavation work for tank foundation tank formation level for Irrigation Tank | 2027-01-02 → 2026-11-10 A (-53d) | 2027-01-14 → 2026-11-15 A (-60d) | 0% → 100% | -26d → none |
| CO-UB-IRT-150 | Soil replacement Up to tank formation level for Irrigation Tank | 2027-01-16 → 2026-12-26 (-21d) | 2027-01-26 → 2027-01-05 (-21d) |  | -26d → -8d |
| 2 | **Structural Work** | 2027-01-27 → 2027-01-06 (-21d) | 2027-02-28 → 2027-02-07 (-21d) |  |  |

| ID | Task | Start | Finish | Complete | Total float |
| --- | --- | --- | --- | --- | --- |
| CO-UB-IRT-160 | Plain Concrete works for Irrigation Tank | 2027-01-27 → 2027-01-06 (-21d) | 2027-01-30 → 2027-01-09 (-21d) |  | -26d → -8d |
| CO-UB-IRT-170 | Form work for Tank Foundation for Irrigation Tank | 2027-01-31 → 2027-01-10 (-21d) | 2027-02-10 → 2027-01-20 (-21d) |  | -26d → -8d |
| CO-UB-IRT-180 | Steel Reinforcement work for Tank Foundation for Irrigation Tank | 2027-02-11 → 2027-01-21 (-21d) | 2027-02-23 → 2027-02-02 (-21d) |  | -26d → -8d |
| CO-UB-IRT-190 | Casting concrete for Tank Foundation for Irrigation Tank | 2027-02-24 → 2027-02-03 (-21d) | 2027-02-28 → 2027-02-07 (-21d) |  | -26d → -8d |
| 3 | **Tank Shell Erection&Roof Installation** | 2027-03-01 → 2027-02-08 (-21d) | 2027-03-20 → 2027-02-23 (-25d) |  |  |
| CO-UB-IRT-210 | shell erection for Irrigation Tank | 2027-03-01 → 2027-02-08 (-21d) | 2027-03-20 → 2027-02-23 (-25d) |  | -26d → -8d |
| 1 | **Control Room** |  | 2027-04-29 → 2027-05-05 (+6d) |  |  |
| 5 | **Civil Work** |  | 2027-01-04 → 2027-01-11 (+7d) |  |  |
| CO-UB-CR-140 | Pouring Beams and Slab For Control Room |  | 2027-01-04 → 2027-01-11 (+7d) |  | -52d → -58d |
| 6 | **Finishing Work** | 2027-01-06 → 2027-01-12 (+6d) | 2027-04-29 → 2027-05-05 (+6d) |  |  |
| 1 | **Architictural work** | 2027-01-06 → 2027-01-12 (+6d) | 2027-02-23 → 2027-03-01 (+6d) |  |  |
| CO-UB-CR-150 | Brick Work For Control Room | 2027-01-06 → 2027-01-12 (+6d) | 2027-01-17 → 2027-01-23 (+6d) |  | -53d → -58d |
| CO-UB-CR-160 | Thermal & Moisture Protection Work for Control Room | 2027-01-18 → 2027-01-24 (+6d) | 2027-01-25 → 2027-01-31 (+6d) |  | -53d → -58d |
| CO-UB-CR-200 | Install For Curtian Wall and Windows and Doors | 2027-01-26 → 2027-02-01 (+6d) | 2027-02-02 → 2027-02-08 (+6d) |  | -53d → -58d |
| CO-UB-CR-240 | External Finshing Work (Walls and Floor) | 2027-02-03 → 2027-02-09 (+6d) | 2027-02-11 → 2027-02-17 (+6d) |  | -53d → -58d |
| CO-UB-CR-250 | Internal Finshing Work (Walls,Floor and Ceiling) | 2027-02-13 → 2027-02-18 (+5d) | 2027-02-23 → 2027-03-01 (+6d) |  | -53d → -58d |
| 3 | **Mechanical Work** | 2027-01-18 → 2027-01-24 (+6d) | 2027-04-14 → 2027-04-20 (+6d) |  |  |
| 3 | **HVAC System** | 2027-01-18 → 2027-01-24 (+6d) | 2027-04-14 → 2027-04-20 (+6d) |  |  |
| CO-UB-CR-170 | Install of Refrigerant Piping ( fabricated metal ducts with flanges complete with supports, vanes, dampers ) | 2027-01-18 → 2027-01-24 (+6d) | 2027-02-10 → 2027-02-16 (+6d) |  | -52d → -57d |
| CO-UB-CR-260 | Install of Mini split actual and Ducted split | 2027-02-24 → 2027-03-02 (+6d) | 2027-03-22 → 2027-03-28 (+6d) |  | -46d → -51d |
| CO-UB-CR-310 | Install of Air Grills 150mm x150mm and Air Diffuser 600mm x 600mm | 2027-03-23 → 2027-03-29 (+6d) | 2027-04-14 → 2027-04-20 (+6d) |  | -46d → -51d |
| 4 | **Fire Fitting System** | 2027-02-11 → 2027-02-17 (+6d) | 2027-03-02 → 2027-03-08 (+6d) |  |  |
| CO-UB-CR-180 | Installation & Testing of 2 hours Fire rated system for closing the openings between rooms with help of Rock wool | 2027-02-11 → 2027-02-17 (+6d) | 2027-02-22 → 2027-02-28 (+6d) |  | -52d → -57d |
| CO-UB-CR-270 | Install Fire Extinguishers | 2027-02-24 → 2027-03-02 (+6d) | 2027-03-02 → 2027-03-08 (+6d) |  | -47d → -52d |
| 1 | **Plumbing System** | 2027-02-24 → 2027-03-02 (+6d) | 2027-03-13 → 2027-03-18 (+5d) |  |  |
| CO-UB-CR-370 | Install of Sanitary Wares Including Relevant Pipes and Fittings | 2027-02-24 → 2027-03-02 (+6d) | 2027-03-13 → 2027-03-18 (+5d) |  | -53d → -58d |
| 4 | **Electrical Work** | 2027-02-24 → 2027-03-02 (+6d) | 2027-04-22 → 2027-04-28 (+6d) |  |  |
| 1 | **LV Power** | 2027-02-24 → 2027-03-02 (+6d) | 2027-04-18 → 2027-04-24 (+6d) |  |  |
| CO-UB-CR-190 | Install of Distribution board For Control Room | 2027-02-24 → 2027-03-02 (+6d) | 2027-03-07 → 2027-03-16 (+9d) |  | -49d → -54d |
| CO-UB-CR-220 | Install of Earting Cable for Control Room | 2027-03-08 → 2027-03-17 (+9d) | 2027-03-27 → 2027-04-01 (+5d) |  | -49d → -54d |
| CO-UB-CR-280 | Install of Socket outlet and LED Lighting | 2027-03-28 → 2027-04-03 (+6d) | 2027-04-18 → 2027-04-24 (+6d) |  | -49d → -54d |
| 3 | **Fire Detection And Alarm System** | 2027-03-14 → 2027-03-20 (+6d) | 2027-04-22 → 2027-04-28 (+6d) |  |  |
| CO-UB-CR-210 | Install of 2C x 1.5 Sqm FR Rated Armored - Cable For Loop Wiring | 2027-03-14 → 2027-03-20 (+6d) | 2027-03-17 → 2027-03-23 (+6d) |  | -53d → -58d |
| CO-UB-CR-230 | Install of Transmission Communication cable - Fiber Optics 12Core | 2027-03-18 → 2027-03-24 (+6d) | 2027-03-22 → 2027-03-28 (+6d) |  | -53d → -58d |
| CO-UB-CR-290 | Install of power supply system for fire alarm control panel | 2027-03-23 → 2027-03-29 (+6d) | 2027-03-27 → 2027-04-01 (+5d) |  | -53d → -58d |
| CO-UB-CR-300 | Install of Fire Alarm Control panel | 2027-03-28 → 2027-04-03 (+6d) | 2027-04-03 → 2027-04-08 (+5d) |  | -53d → -58d |
| CO-UB-CR-320 | Installation of the addressable manual call point with operation safety glass breaking | 2027-04-04 → 2027-04-10 (+6d) | 2027-04-06 → 2027-04-12 (+6d) |  | -53d → -58d |
| CO-UB-CR-330 | Install of the photoelectric heat & smoke detector | 2027-04-07 → 2027-04-13 (+6d) | 2027-04-12 → 2027-04-18 (+6d) |  | -53d → -58d |
| CO-UB-CR-340 | Install of Sounder With Beacon | 2027-04-13 → 2027-04-19 (+6d) | 2027-04-18 → 2027-04-24 (+6d) |  | -53d → -58d |
| CO-UB-CR-350 | Install of Addressable Control module | 2027-04-19 → 2027-04-25 (+6d) | 2027-04-22 → 2027-04-28 (+6d) |  | -53d → -58d |
| 2 | **Furnitures work** | 2027-04-24 → 2027-04-29 (+5d) | 2027-04-29 → 2027-05-05 (+6d) |  |  |
| CO-UB-CR-360 | Office Chairs,Tables and Stand | 2027-04-24 → 2027-04-29 (+5d) | 2027-04-29 → 2027-05-05 (+6d) |  | -53d → -58d |
| ML | **Softscape and Planting Works** | 2027-04-29 → 2027-05-06 (+7d) | 2027-06-14 → 2027-06-21 (+7d) |  |  |
| CO-LS-PL-160 | Planting Works: Planting including plants, forming planting beds, suitable soil, supports, and protection | 2027-04-29 → 2027-05-06 (+7d) | 2027-05-22 → 2027-05-29 (+7d) |  | -95d → -101d |
| CO-LS-SF-170 | Site Furnishings (Seating Bench,Stone Boulders and Gravel) | 2027-05-23 → 2027-05-30 (+7d) | 2027-06-14 → 2027-06-21 (+7d) |  | -95d → -101d |
| 6 | **Storm Drainage Ponds** |  | 2027-05-25 → 2027-06-01 (+7d) |  |  |
| CO-SD-PO-100-P1 | Excavation & Filling Works - PART 1 for Storm Drainage Ponds |  | 2027-03-31 → 2027-04-07 (+7d) |  | -116d → -122d |
| CO-SD-PO-110-P1 | Finished Grouted Riprap - PART 1 for Storm Drainage Ponds | 2027-03-01 A → 2026-11-11 A (-110d) | 2027-04-10 → 2027-04-17 (+7d) |  | -116d → -122d |
| CO-SD-PO-100-P2 | Excavation & Filling Works - PART 2 for Storm Drainage Ponds | 2027-04-11 → 2027-04-18 (+7d) | 2027-04-29 → 2027-05-06 (+7d) |  | -111d → -117d |
| CO-SD-PO-110-P2 | Finished Grouted Riprap - PART 2 for Storm Drainage Ponds | 2027-05-01 → 2027-05-08 (+7d) | 2027-05-25 → 2027-06-01 (+7d) |  | -111d → -117d |
| 1 | **Boundary Fence and Gaurd Room** |  | 2027-06-20 → 2027-06-27 (+7d) |  |  |
| 1 | **Gaurd Room Work** |  | 2027-06-20 → 2027-06-27 (+7d) |  |  |
| 1 | **Civil Work** |  | 2027-05-11 → 2027-05-24 (+13d) |  |  |
| A1000 | Excavation Work For Guard Room Foundation |  | 2027-04-29 → 2027-05-06 (+7d) |  | -108d → -114d |
| A1010 | Pouring for Plain Concrete for Guard Room | 2027-05-01 A → 2026-11-11 A (-171d) | 2027-05-01 → 2027-05-08 (+7d) | 30% → 67% | -108d → -114d |
| A1030 | Pouring R.C Columns for Guard Room | 2027-05-05 → 2026-11-12 A (-174d) | 2027-05-08 → 2027-05-20 (+12d) | 0% → 67% | -108d → -114d |
| A1020 | Pouring R.C Footing for Guard Room | 2027-05-02 → 2027-05-09 (+7d) | 2027-05-04 → 2027-05-11 (+7d) |  | -108d → -114d |
| A1040 | Pouring Beams and Slab for Guard Room | 2027-05-09 → 2027-05-22 (+13d) | 2027-05-11 → 2027-05-24 (+13d) |  | -108d → -114d |
| 2 | **Finishing Work** | 2027-05-12 → 2027-05-25 (+13d) | 2027-06-20 → 2027-06-27 (+7d) |  |  |
| 1 | **Architectural work** | 2027-05-12 → 2027-05-25 (+13d) | 2027-06-17 → 2027-06-24 (+7d) |  |  |
| A1050 | Brick Works for Architectural Works for Guard Rooms | 2027-05-12 → 2027-05-25 (+13d) | 2027-05-24 → 2027-05-31 (+7d) |  | -108d → -114d |
| A1060 | Thermal & Moisture Protection Work for Architectural Works for Guard Rooms | 2027-05-25 → 2027-06-01 (+7d) | 2027-05-30 → 2027-06-06 (+7d) |  | -108d → -114d |
| A1080 | External Finshing Work (Walls and Floor) for Architectural Works for Guard Rooms | 2027-06-06 → 2027-06-13 (+7d) | 2027-06-07 → 2027-06-14 (+7d) |  | -104d → -110d |
| A1090 | Internal Finshing Work (Walls,Floor and Ceiling) for Architectural Works for Guard Rooms | 2027-06-06 → 2027-06-13 (+7d) | 2027-06-12 → 2027-06-19 (+7d) |  | -108d → -114d |
| A1070 | Installation of Windows and Doors for Architectural Works for Guard Rooms | 2027-06-13 → 2027-06-20 (+7d) | 2027-06-17 → 2027-06-24 (+7d) |  | -108d → -114d |
| 3 | **Mechanical Work** | 2027-05-31 → 2027-06-07 (+7d) | 2027-06-08 → 2027-06-15 (+7d) |  |  |
| 1 | **Drainage System** | 2027-05-31 → 2027-06-07 (+7d) | 2027-06-08 → 2027-06-15 (+7d) |  |  |
| A1110 | Installation of Sewage Piping System complete with joints, angles, reducer etc. for Drainage System for Guard Rooms | 2027-05-31 → 2027-06-07 (+7d) | 2027-06-03 → 2027-06-10 (+7d) |  | -107d → -113d |
| A1120 | Installation of all Sanitary Ware for Drainage System for Guard Rooms | 2027-06-05 → 2027-06-12 (+7d) | 2027-06-08 → 2027-06-15 (+7d) |  | -100d → -106d |
| 2 | **Water Supply System** | 2027-05-31 → 2027-06-07 (+7d) | 2027-06-08 → 2027-06-15 (+7d) |  |  |

| ID | Task | Start | Finish | Complete | Total float | Other |
| --- | --- | --- | --- | --- | --- | --- |
| A1140 | Installation of Water Piping System complete with joints, angles, reducer etc. for Water Supply System for Guard Rooms | 2027-05-31 → 2027-06-07 (+7d) | 2027-06-02 → 2027-06-09 (+7d) |  | -106d → -112d |  |
| A1180 | Installation oF Water Supply Wares (Water Heater, Faucets, Etc..) for Water Supply System for Guard Rooms | 2027-06-03 → 2027-06-10 (+7d) | 2027-06-05 → 2027-06-12 (+7d) |  | -97d → -103d |  |
| A1240 | Installation of water tanks for Water Supply System for Guard Rooms | 2027-06-08 → 2027-06-15 (+7d) | 2027-06-08 → 2027-06-15 (+7d) |  | -98d → -104d |  |
| 3 | **HVAC System** | 2027-05-31 → 2027-06-07 (+7d) | 2027-06-02 → 2027-06-09 (+7d) |  |  |  |
| A1200 | Installation of AC Piping for HVAC System for Guard Rooms | 2027-05-31 → 2027-06-07 (+7d) | 2027-06-01 → 2027-06-08 (+7d) |  | -105d → -111d |  |
| A1190 | Installation of AC Units for HVAC System for Guard Rooms | 2027-06-02 → 2027-06-09 (+7d) | 2027-06-02 → 2027-06-09 (+7d) |  | -95d → -101d |  |
| 4 | **Fire Fighting System** | 2027-05-31 → 2027-06-07 (+7d) | 2027-06-02 → 2027-06-09 (+7d) |  |  |  |
| A1220 | Installation & Testing of 2 hours Fire Fighting system for Fire Fighting System for Guard Rooms | 2027-05-31 → 2027-06-07 (+7d) | 2027-06-01 → 2027-06-08 (+7d) |  | -105d → -111d |  |
| A1230 | Installation of Fire Extinguishers for Fire Fighting System for Guard Rooms | 2027-06-02 → 2027-06-09 (+7d) | 2027-06-02 → 2027-06-09 (+7d) |  | -95d → -101d |  |
| 4 | **Electrical Work** | 2027-05-31 → 2027-06-07 (+7d) | 2027-06-12 → 2027-06-19 (+7d) |  |  |  |
| 1 | **LV Power** | 2027-05-31 → 2027-06-07 (+7d) | 2027-06-09 → 2027-06-16 (+7d) |  |  |  |
| A1250 | Installation of Conduits and Cables for LV System for Gaurd Rooms | 2027-05-31 → 2027-06-07 (+7d) | 2027-06-05 → 2027-06-12 (+7d) |  | -108d → -114d |  |
| A1260 | Install of Eletrical Finishes (DBs, Sockets and Lightings) and Termination for LV System for Gaurd Rooms | 2027-06-06 → 2027-06-13 (+7d) | 2027-06-09 → 2027-06-16 (+7d) |  | -101d → -107d |  |
| 3 | **Fire Detection And Alarm System** | 2027-05-31 → 2027-06-07 (+7d) | 2027-06-12 → 2027-06-19 (+7d) |  |  |  |
| A1340 | Installation of Conduits and Cables for Fire Alarm System for Gaurd Rooms | 2027-05-31 → 2027-06-07 (+7d) | 2027-06-05 → 2027-06-12 (+7d) |  | -108d → -114d |  |
| A1350 | Installation of Fire Alarm Devices (AMCP, SD,HD, Sounder and Panels) for Fire Alarm System for Gaurd Rooms | 2027-06-06 → 2027-06-13 (+7d) | 2027-06-12 → 2027-06-19 (+7d) |  | -103d → -109d |  |
| 2 | **Furniture work** | 2027-06-19 → 2027-06-26 (+7d) | 2027-06-20 → 2027-06-27 (+7d) |  |  |  |
| A1100 | Office Chairs,Tables and Stand | 2027-06-19 → 2027-06-26 (+7d) | 2027-06-20 → 2027-06-27 (+7d) |  | -108d → -114d |  |
| 3 | **Boundary Fence** |  | 2027-06-03 → 2027-06-10 (+7d) |  |  |  |
| 2 | **Boundary Fence - South** |  | 2027-04-05 → 2027-04-29 (+24d) |  |  |  |
| 1 | **Civil Work** |  | 2027-01-02 → 2027-01-26 (+24d) |  |  |  |
| CO-SU-FE-N-CI-130 | Pouring R.C Columns For Boundary Fence South |  | 2026-12-20 → 2027-01-12 (+23d) |  | -54d → -74.42d |  |
| CO-SU-FE-N-CI-140 | Pouring Beams For Boundary Fence South | 2026-12-20 → 2027-01-12 (+23d) | 2027-01-02 → 2027-01-26 (+24d) |  | -54d → -74.42d |  |
| 5 | **Finishing Work** |  | 2027-04-05 → 2027-04-29 (+24d) |  |  |  |
| 4 | **Architictural work** |  | 2027-03-08 → 2027-04-05 (+28d) |  |  |  |
| CO-SU-FE-N-AR-100 | Install Brick Work For Boundary Fence South |  | 2027-01-24 → 2027-02-17 (+24d) |  | -54d → -74.42d |  |
| CO-SU-FE-N-AR-110 | Insulation For Boundary Fence South | 2027-02-09 → 2027-03-04 (+23d) | 2027-02-25 → 2027-03-25 (+28d) |  | -54d → -74.42d |  |
| CO-SU-FE-N-AR-120 | Install all the Relevant Cladding and Finishes For Boundary Fence South | 2027-02-27 → 2027-03-25 (+26d) | 2027-03-08 → 2027-04-05 (+28d) |  | -51d → -71.42d |  |
| 3 | **Electrical Work** | 2027-01-25 → 2027-02-17 (+23d) | 2027-04-05 → 2027-04-29 (+24d) |  |  |  |
| CO-SU-FE-N-EL-240 | Installation of Conduits and Cables for Electricial Works For Boundary Fence South | 2027-01-25 → 2027-02-17 (+23d) | 2027-02-08 → 2027-03-04 (+24d) |  | -54d → -74.42d |  |
| CO-SU-FE-N-EL-250 | Install, fixings, testing of all electrical finishes and lightings for Electricial Works For Boundary Fence South | 2027-03-13 → 2027-04-05 (+23d) | 2027-04-05 → 2027-04-29 (+24d) |  | -51d → -71.42d |  |
| 1 | **Boundary Fence - West** |  | 2027-04-15 → 2027-05-10 (+25d) |  |  |  |
| 5 | **Finishing Work** |  | 2027-04-15 → 2027-05-10 (+25d) |  |  |  |
| 4 | **Architictural work** |  | 2027-03-29 → 2027-04-22 (+24d) |  |  |  |
| CO-SU-FE-N-AR-150 | Install all the Relevant Cladding and Finishes For Boundary Fence West | 2027-03-16 → 2026-10-01 A (-166d) | 2027-03-29 → 2027-04-22 (+24d) | 0% → 20% | -54d → -74.42d | resources Skilled Labor [76.8 h]; Unskilled Labor [76.8 h]; Supply and install 33mm thick Lexan cladding blue complete with necessary framings & accessories all as per manufacturer's & architectural drawing. [283.58]; Supply and install 50mm thick random cut stone cladding complete with 600mm x 50mm thick coping, necessary framings, slotted anchor connection, steel tube framing, aluminum angles all necessary fittings & accessories as per manufacturer's detail & archite [3981.34]; Supply and install External plastering to walls and columns min. 15mm thick with cement mortar of specified grade including galvanized mesh, corner beads, angle beads, CE bonds to rough and smooth plaster complete the work as per drawing & specification. [4477.61]; Supply and install 2 coats of weatherproof paint at walls including one prime coat and two coats and putty to give smooth Surface as a base for paint including fiberglass tape to joints and all other accessories as per manufacturers approved specification [4477.61]; Supply and install MODON Signage with Logo Type 1 [3.73]; Supply and install MODON Signage Type 2 [3.73]; Supply and install "Triangle Style" signage [11.19] → Skilled Labor [96 h]; Unskilled Labor [96 h]; Supply and install 33mm thick Lexan cladding blue complete with necessary framings & accessories all as per manufacturer's & architectural drawing. [283.58]; Supply and install 50mm thick random cut stone cladding complete with 600mm x 50mm thick coping, necessary framings, slotted anchor connection, steel tube framing, aluminum angles all necessary fittings & accessories as per manufacturer's detail & archite [3981.34]; Supply and install External plastering to walls and columns min. 15mm thick with cement mortar of specified grade including galvanized mesh, corner beads, angle beads, CE bonds to rough and smooth plaster complete the work as per drawing & specification. [4477.61]; Supply and install 2 coats of weatherproof paint at walls including one prime coat and two coats and putty to give smooth Surface as a base for paint including fiberglass tape to joints and all other accessories as per manufacturers approved specification [4477.61]; Supply and install MODON Signage with Logo Type 1 [3.73]; Supply and install MODON Signage Type 2 [3.73]; Supply and install "Triangle Style" signage [11.19] |
| CO-SU-FE-N-AR-140 | Insulation For Boundary Fence West |  | 2027-03-15 → 2027-04-08 (+24d) |  | -54d → -74.42d |  |
| 3 | **Electrical Work** | 2027-02-09 → 2027-03-04 (+23d) | 2027-04-15 → 2027-05-10 (+25d) |  |  |  |
| CO-SU-FE-N-EL-260 | Installation of Conduits and Cables for Electricial Works For Boundary Fence West | 2027-02-09 → 2027-03-04 (+23d) | 2027-02-17 → 2027-03-17 (+28d) |  | -47d → -67.42d |  |
| CO-SU-FE-N-EL-270 | Install, fixings, testing of all electrical finishes and lightings for Electricial Works For Boundary Fence West | 2027-04-06 → 2027-04-29 (+23d) | 2027-04-15 → 2027-05-10 (+25d) |  | -51d → -71.42d |  |
| 3 | **Boundary Fence - North** |  | 2027-04-12 → 2027-05-06 (+24d) |  |  |  |
| 1 | **Civil Work** |  | 2027-01-16 → 2027-02-09 (+24d) |  |  |  |
| CO-SU-FE-N-CI-240 | Pouring Beams For Boundary Fence North | 2027-01-03 → 2027-01-26 (+23d) | 2027-01-16 → 2027-02-09 (+24d) |  | -13d → -33.42d |  |
| 5 | **Finishing Work** |  | 2027-04-12 → 2027-05-06 (+24d) |  |  |  |
| 4 | **Architictural work** |  | 2027-04-05 → 2027-04-29 (+24d) |  |  |  |
| CO-SU-FE-N-AR-180 | Install all the Relevant Cladding and Finishes For Boundary Fence North |  | 2027-04-05 → 2027-04-29 (+24d) |  | -54d → -74.42d |  |
| CO-SU-FE-N-AR-170 | Insulation For Boundary Fence North | 2027-03-16 → 2026-11-11 A (-125d) | 2027-03-28 → 2027-04-21 (+24d) | 0% → 50% | -53d → -73.42d | resources Skilled Labor [132 h]; Unskilled Labor [132 h]; Two Layers of Bituminous Coating [12532]; 20x20 Approved Polysulfide Joint Sealant [115.67]; 2 perpendicular layers of cold bitumen coats [22.39]; 2 layer of 4mm HDPE membrane, 2 perpendicular layers cold bitumen coats [22.39]; 1 layer EPOXY Paint 300 micron [22.39]; Membrane fully bonded to prime deck and upstand [22.39]; Geotextile Filter membrane uv resistance [22.39]; 85mm thick thermal insulation [22.39]; 1.5mm thick epdm waterproofing membrane [22.39] → Skilled Labor [264 h]; Unskilled Labor [264 h]; Two Layers of Bituminous Coating [12532]; 20x20 Approved Polysulfide Joint Sealant [115.67]; 2 perpendicular layers of cold bitumen coats [22.39]; 2 layer of 4mm HDPE membrane, 2 perpendicular layers cold bitumen coats [22.39]; 1 layer EPOXY Paint 300 micron [22.39]; Membrane fully bonded to prime deck and upstand [22.39]; Geotextile Filter membrane uv resistance [22.39]; 85mm thick thermal insulation [22.39]; 1.5mm thick epdm waterproofing membrane [22.39] |
| 3 | **Electrical Work** | 2027-02-18 → 2027-03-17 (+27d) | 2027-04-12 → 2027-05-06 (+24d) |  |  |  |
| CO-SU-FE-N-EL-280 | Installation of Conduits and Cables for Electricial Works For Boundary Fence North | 2027-02-18 → 2027-03-17 (+27d) | 2027-02-25 → 2027-03-25 (+28d) |  | -41d → -61.42d |  |
| CO-SU-FE-N-EL-290 | Install, fixings, testing of all electrical finishes and lightings for Electricial Works For Boundary Fence North | 2027-04-06 → 2027-04-29 (+23d) | 2027-04-12 → 2027-05-06 (+24d) |  | -51d → -71.42d |  |
| 4 | **Boundary Fence - East** |  | 2027-06-03 → 2027-06-10 (+7d) |  |  |  |
| 1 | **Civil Work** |  | 2027-01-27 → 2027-02-21 (+25d) |  |  |  |
| CO-SU-FE-N-CI-250 | Excavation Work For Boundary Fence East | 2026-12-19 A → 2026-09-09 A (-101d) | 2026-12-19 A → 2026-09-19 A (-91d) |  |  |  |
| CO-SU-FE-N-CI-280 | Pouring R.C Columns For Boundary Fence East |  | 2027-01-06 → 2027-01-31 (+25d) |  | -1d → -21.42d |  |
| CO-SU-FE-N-CI-290 | Pouring Beams For Boundary Fence East | 2027-01-17 → 2027-02-09 (+23d) | 2027-01-27 → 2027-02-21 (+25d) |  | -9d → -29.42d |  |
| 5 | **Finishing Work** |  | 2027-06-03 → 2027-06-10 (+7d) |  |  |  |
| 4 | **Architictural work** |  | 2027-05-29 → 2027-06-05 (+7d) |  |  |  |
| CO-SU-FE-N-AR-210 | Install all the Relevant Cladding and Finishes For Boundary Fence East | 2027-05-13 → 2027-05-26 (+13d) | 2027-05-29 → 2027-06-05 (+7d) |  | -86d → -92d |  |
| 3 | **Electrical Work** | 2027-05-02 → 2027-05-09 (+7d) | 2027-06-03 → 2027-06-10 (+7d) |  |  |  |
| CO-SU-FE-N-EL-300 | Installation of Conduits and Cables for Electricial Works For Boundary Fence East | 2027-05-02 → 2027-05-09 (+7d) | 2027-05-12 → 2027-05-25 (+13d) |  | -86d → -92d |  |
| CO-SU-FE-N-EL-310 | Install, fixings, testing of all electrical finishes and lightings for Electricial Works For Boundary Fence East | 2027-05-30 → 2027-06-06 (+7d) | 2027-06-03 → 2027-06-10 (+7d) |  | -86d → -92d |  |
| TC | **Testing and Comissioning** | 2027-06-22 → 2027-06-29 (+7d) | 2027-07-19 → 2027-07-26 (+7d) |  |  |  |
| INF | **Infrastructure Networks** | 2027-06-29 → 2027-07-06 (+7d) | 2027-07-19 → 2027-07-26 (+7d) |  |  |  |
| LV | **Low Voltage Network** | 2027-06-29 → 2027-07-06 (+7d) | 2027-07-12 → 2027-07-19 (+7d) |  |  |  |
| TC-LV-100 | Testing and Commissioning of Low Voltage Network | 2027-06-29 → 2027-07-06 (+7d) | 2027-07-12 → 2027-07-19 (+7d) |  | -110d → -116d |  |
| PW1 | **Irrigation Network** | 2027-06-29 → 2027-07-06 (+7d) | 2027-07-12 → 2027-07-19 (+7d) |  |  |  |
| T/C-IR | Testing and Commissioning of Irrigation Network | 2027-06-29 → 2027-07-06 (+7d) | 2027-07-12 → 2027-07-19 (+7d) |  | -110d → -116d |  |
| PW11 | **TSE Network** | 2027-06-29 → 2027-07-06 (+7d) | 2027-07-12 → 2027-07-19 (+7d) |  |  |  |
| T/C-TSE-10 | Testing and Commissioning of TSE Network | 2027-06-29 → 2027-07-06 (+7d) | 2027-07-12 → 2027-07-19 (+7d) |  | -110d → -116d |  |
| PW | **Potable Water Network** | 2027-06-29 → 2027-07-06 (+7d) | 2027-07-12 → 2027-07-19 (+7d) |  |  |  |
| T/C-PW | Testing and Commissioning of Potable Water Network | 2027-06-29 → 2027-07-06 (+7d) | 2027-07-12 → 2027-07-19 (+7d) |  | -110d → -116d |  |

| ID | Task | Start | Finish | Total float |
| --- | --- | --- | --- | --- |
| SW | **Sewage Network** | 2027-06-29 → 2027-07-06 (+7d) | 2027-07-12 → 2027-07-19 (+7d) |  |
| T/C-SW | Testing and Commissioning of Sewage Network | 2027-06-29 → 2027-07-06 (+7d) | 2027-07-12 → 2027-07-19 (+7d) | -110d → -116d |
| SD | **Storm Drainage Network** | 2027-06-29 → 2027-07-06 (+7d) | 2027-07-19 → 2027-07-26 (+7d) |  |
| T/C-DPO | Testing and Commissioning of Storm Drainage Ponds | 2027-06-29 → 2027-07-06 (+7d) | 2027-07-12 → 2027-07-19 (+7d) | -110d → -116d |
| T/C-SD | Testing and Commissioning of Storm Drainage Ponds and Storm Drainage Network | 2027-07-06 → 2027-07-13 (+7d) | 2027-07-19 → 2027-07-26 (+7d) | -116d → -122d |
| SL | **Street Lighting Network** | 2027-06-29 → 2027-07-06 (+7d) | 2027-07-12 → 2027-07-19 (+7d) |  |
| T/C-SL | Testing and Commissioning of Street Lighting Network | 2027-06-29 → 2027-07-06 (+7d) | 2027-07-12 → 2027-07-19 (+7d) | -110d → -116d |
| TE | **Telecom and Light Current Network** | 2027-06-29 → 2027-07-06 (+7d) | 2027-07-12 → 2027-07-19 (+7d) |  |
| T/C-TE | Testing and Commissioning of Telecom and Light Current Networks | 2027-06-29 → 2027-07-06 (+7d) | 2027-07-12 → 2027-07-19 (+7d) | -110d → -116d |
| MV | **Medium Voltage Network** | 2027-06-29 → 2027-07-06 (+7d) | 2027-07-12 → 2027-07-19 (+7d) |  |
| T/C-MV | Testing and Commissioning of Medium Voltage Network | 2027-06-29 → 2027-07-06 (+7d) | 2027-07-12 → 2027-07-19 (+7d) | -110d → -116d |
| RD | **Road Works** | 2027-06-29 → 2027-07-06 (+7d) | 2027-07-12 → 2027-07-19 (+7d) |  |
| T/C-RD | Testing and Commissioning of Road Works | 2027-06-29 → 2027-07-06 (+7d) | 2027-07-12 → 2027-07-19 (+7d) | -111d → -117d |
| 1 | **Utility Buildings** | 2027-06-22 → 2027-06-29 (+7d) | 2027-07-19 → 2027-07-26 (+7d) |  |
| T/C-CTV | Testing and Commissioning of Guard Room and Boundary Fence | 2027-06-22 → 2027-06-29 (+7d) | 2027-07-10 → 2027-07-17 (+7d) | -109d → -115d |
| T/C-CTV20 | Testing and Commissioning of Softscape And Planting | 2027-06-22 → 2027-06-29 (+7d) | 2027-07-10 → 2027-07-17 (+7d) | -101d → -107d |
| T/C-CTV10 | Testing and Commissioning of Utility Buildings | 2027-07-01 → 2027-07-08 (+7d) | 2027-07-19 → 2027-07-26 (+7d) | -109d → -115d |
| 1 | **Handing over and close out** | 2027-06-29 → 2027-07-06 (+7d) | 2027-07-27 → 2027-08-03 (+7d) |  |
| 2 | **As-Built** | 2027-06-29 → 2027-07-06 (+7d) | 2027-07-21 → 2027-07-28 (+7d) |  |
| HO-100 | Submission As-Built Drawing For Sewage Network | 2027-06-29 → 2027-07-06 (+7d) | 2027-07-10 → 2027-07-17 (+7d) | -101d → -107d |
| HO-130 | Submission As-Built Drawing For Pond | 2027-06-29 → 2027-07-06 (+7d) | 2027-07-10 → 2027-07-17 (+7d) | -101d → -107d |
| HO-140 | Submission As-Built Drawing For Roads Network | 2027-06-29 → 2027-07-06 (+7d) | 2027-07-10 → 2027-07-17 (+7d) | -101d → -107d |
| HO-150 | Submission As-Built Drawing For Street Lighting Network | 2027-06-29 → 2027-07-06 (+7d) | 2027-07-10 → 2027-07-17 (+7d) | -101d → -107d |
| HO-160 | Submission As-Built Drawing For Telecom and Light Current Networks | 2027-06-29 → 2027-07-06 (+7d) | 2027-07-10 → 2027-07-17 (+7d) | -101d → -107d |
| HO-180 | Submission As-Built Drawing For Irrigation Network | 2027-06-29 → 2027-07-06 (+7d) | 2027-07-10 → 2027-07-17 (+7d) | -101d → -107d |
| HO-200 | Submission As-Built Drawing For Storm Network | 2027-07-06 → 2027-07-13 (+7d) | 2027-07-17 → 2027-07-24 (+7d) | -107d → -113d |
| HO-170 | Submission As-Built Drawing For Medium Voltage Network | 2027-07-13 → 2027-07-20 (+7d) | 2027-07-20 → 2027-07-27 (+7d) | -110d → -116d |
| HO-190 | As-Built Drawing For Potable Water Network | 2027-07-13 → 2027-07-20 (+7d) | 2027-07-20 → 2027-07-27 (+7d) | -110d → -116d |
| HO-210 | Submission As-Built Drawing For Utility Buildings | 2027-07-13 → 2027-07-20 (+7d) | 2027-07-21 → 2027-07-28 (+7d) | -111d → -117d |
| 1 | **De-Mobilization Works** | 2027-07-01 → 2027-07-08 (+7d) | 2027-07-21 → 2027-07-28 (+7d) |  |
| HO-230 | Remove Temporary Car Shades | 2027-07-01 → 2027-07-08 (+7d) | 2027-07-12 → 2027-07-19 (+7d) | -103d → -109d |
| HO-220 | Removing Portable Caravan | 2027-07-05 → 2027-07-12 (+7d) | 2027-07-12 → 2027-07-19 (+7d) | -111d → -117d |
| HO-120 | Remove material stock & Storage area | 2027-07-13 → 2027-07-20 (+7d) | 2027-07-21 → 2027-07-28 (+7d) | -111d → -117d |
| 3 | **Handing Over** | 2027-07-04 → 2027-07-11 (+7d) | 2027-07-27 → 2027-08-03 (+7d) |  |
| HO-240 | Final Walkthrough and Inspection | 2027-07-04 → 2027-07-11 (+7d) | 2027-07-12 → 2027-07-19 (+7d) | -103d → -109d |
| HO-250 | Review B.O.Q Qty. to ensure compliance with the actual status | 2027-07-04 → 2027-07-11 (+7d) | 2027-07-12 → 2027-07-19 (+7d) | -103d → -109d |
| HO-260 | Review FIR Approval to ensure compliance with the actual status | 2027-07-04 → 2027-07-11 (+7d) | 2027-07-12 → 2027-07-19 (+7d) | -103d → -109d |
| HO-270 | Review the sample drawing to ensure compliance with the actual status | 2027-07-04 → 2027-07-11 (+7d) | 2027-07-12 → 2027-07-19 (+7d) | -111d → -117d |
| HO-280 | Punch List Completion | 2027-07-13 → 2027-07-20 (+7d) | 2027-07-21 → 2027-07-28 (+7d) | -111d → -117d |
| HO-110 | Final Testing Work | 2027-07-20 → 2027-07-27 (+7d) | 2027-07-27 → 2027-08-03 (+7d) | -116d → -122d |

## Version 8 (data date 2026-11-23, saved 2026-11-25, file DHRT-01-001-BL00.R01-53update23-11-2026.xer)

Last finish 2027-08-03 → 2027-08-10 (+7d).

Changed:

| ID | Task | Start | Finish | Total float |
| --- | --- | --- | --- | --- |
| MS | **Key Milestones** |  | 2027-08-03 → 2027-08-10 (+7d) |  |
| CM | **Contractual Milestones** |  | 2027-08-03 → 2027-08-10 (+7d) |  |
| MS-CF-ENG | Completion of Submitting and Approval of Shopdrawing and Materials | 2026-12-13 → 2026-12-20 (+7d) | 2026-12-13 → 2026-12-20 (+7d) | -121d → -127d |
| MS-CF-SW | Completion of Construction Works for Sewage Network | 2027-03-29 → 2027-04-05 (+7d) | 2027-03-29 → 2027-04-05 (+7d) | -107d → -113d |
| MS-CF-MV | Completion of Construction Works for Medium Voltage Network | 2027-05-08 → 2027-05-20 (+12d) | 2027-05-08 → 2027-05-20 (+12d) | -92d → -98d |
| MS-CF-IR | Completion of Construction Works for Irrigation Network | 2027-05-24 → 2027-05-31 (+7d) | 2027-05-24 → 2027-05-31 (+7d) | -80d → -86d |
| MS-CF-PW | Completion of Construction Works for Potable Water Network | 2027-05-24 → 2027-05-31 (+7d) | 2027-05-24 → 2027-05-31 (+7d) | -80d → -86d |
| MS-CF-TE | Completion of Construction Works for Telecom and Light Current Networks | 2027-06-01 → 2027-06-08 (+7d) | 2027-06-01 → 2027-06-08 (+7d) | -87d → -93d |
| MS-MO-20 | Completion of Storm Drainage Ponds | 2027-06-01 → 2027-06-08 (+7d) | 2027-06-01 → 2027-06-08 (+7d) | -113d → -119d |
| MS-CF-LO | Completion of Construction Works for Low Voltage Network | 2027-06-02 → 2027-06-09 (+7d) | 2027-06-02 → 2027-06-09 (+7d) | -88d → -94d |
| MS-CF-RD | Completion of Construction Works for Road Works | 2027-06-03 → 2027-06-10 (+7d) | 2027-06-03 → 2027-06-10 (+7d) | -90d → -96d |
| MS-CF-SD | Completion of Construction Works for Storm Drainage Network | 2027-06-07 → 2027-06-14 (+7d) | 2027-06-07 → 2027-06-14 (+7d) | -92d → -98d |
| MS-CF-SL | Completion of Construction Works for Street Lighting Network | 2027-06-07 → 2027-06-14 (+7d) | 2027-06-07 → 2027-06-14 (+7d) | -92d → -98d |
| MS-CF-TSE | Completion of Construction Works for Treated Sewage Effluent Network | 2027-06-10 → 2027-06-17 (+7d) | 2027-06-10 → 2027-06-17 (+7d) | -76d → -82d |
| MS-MO-10 | Completion of Sewage Pump Station | 2027-07-01 → 2027-07-08 (+7d) | 2027-07-01 → 2027-07-08 (+7d) | -94d → -100d |
| MS-MO-50 | Completion of Water Pump Station | 2027-07-01 → 2027-07-08 (+7d) | 2027-07-01 → 2027-07-08 (+7d) | -113d → -119d |
| MS-MO-60 | Completion of Irrigation and Potable Tank | 2027-07-07 → 2027-07-14 (+7d) | 2027-07-07 → 2027-07-14 (+7d) | -99d → -105d |
| MS-MO-40 | Completion of Control Room | 2027-07-26 → 2027-08-02 (+7d) | 2027-07-26 → 2027-08-02 (+7d) | -115d → -121d |
| MS-CF-PF | Project Completion Date | 2027-08-03 → 2027-08-10 (+7d) | 2027-08-03 → 2027-08-10 (+7d) | -122d → -128d |
| CM1 | **Control Milestones** |  | 2026-11-16 → 2026-11-23 (+7d) |  |
| 2 | **The Employer** |  | 2026-11-16 → 2026-11-23 (+7d) |  |
| MS-MM-120 | Receipt of Advance Payment for the Project From The Employer | 2026-11-16 → 2026-11-23 (+7d) | 2026-11-16 → 2026-11-23 (+7d) | -66d → -72d |
| ENG | **Engineering Works** |  | 2026-12-13 → 2026-12-20 (+7d) |  |
| SD11 | **Material Submittals and Approvals** |  | 2026-12-13 → 2026-12-20 (+7d) |  |
| 1 | **Long Lead Time Items** | 2026-11-16 → 2026-11-23 (+7d) | 2026-12-13 → 2026-12-20 (+7d) |  |
| 2 | **Superstructure Works** | 2026-11-16 → 2026-11-23 (+7d) | 2026-12-13 → 2026-12-20 (+7d) |  |
| SL | **Sewage Pump Stations** | 2026-11-16 → 2026-11-23 (+7d) | 2026-11-29 → 2026-12-06 (+7d) |  |
| 1 | **Submission of Material** | 2026-11-16 → 2026-11-23 (+7d) | 2026-11-22 → 2026-11-29 (+7d) |  |
| ENG-MT-SPS-MC-S-100 | Material Submittal for Electromechanical Works for Pump Station | 2026-11-16 → 2026-11-23 (+7d) | 2026-11-22 → 2026-11-29 (+7d) | -109d → -115d |
| 2 | **Approval of Material** | 2026-11-23 → 2026-11-30 (+7d) | 2026-11-29 → 2026-12-06 (+7d) |  |
| ENG-MT-SPS-MC-A-110 | Material Approval for Electromechanical Works for Pump Station | 2026-11-23 → 2026-11-30 (+7d) | 2026-11-29 → 2026-12-06 (+7d) | -109d → -115d |
| SL1 | **Storage Tank (TSE)** | 2026-11-16 → 2026-11-23 (+7d) | 2026-12-13 → 2026-12-20 (+7d) |  |
| 1 | **Submission of Material** | 2026-11-16 → 2026-11-23 (+7d) | 2026-11-29 → 2026-12-06 (+7d) |  |
| ENG-MT-TSE-MC-S-110 | Material Submittal for Electromechanical Works for Storage Tank (TSE) | 2026-11-16 → 2026-11-23 (+7d) | 2026-11-29 → 2026-12-06 (+7d) | -121d → -127d |
| 2 | **Approval of Material** | 2026-11-30 → 2026-12-07 (+7d) | 2026-12-13 → 2026-12-20 (+7d) |  |
| ENG-MT-TSE-MC-A-120 | Material Approval for Electromechanical Works for Storage Tank (TSE) | 2026-11-30 → 2026-12-07 (+7d) | 2026-12-13 → 2026-12-20 (+7d) | -121d → -127d |
| PROC | **Procurement Cycle** |  | 2027-07-07 → 2027-07-14 (+7d) |  |
| NLL | **Short Lead Time Items** |  | 2027-05-27 → 2027-06-03 (+7d) |  |
| INF | **Infrastructure Networks** |  | 2027-05-27 → 2027-06-03 (+7d) |  |
| SD | **Storm Drainage Network** |  | 2027-03-30 → 2027-04-06 (+7d) |  |
| PO | **Issuance of Purchase Orders** |  | 2026-12-20 → 2026-12-27 (+7d) |  |
| TE1 | **Storm Drainage Ponds** | 2026-12-14 → 2026-12-21 (+7d) | 2026-12-20 → 2026-12-27 (+7d) |  |
| PRO-DPO-CV-PO-10 | Issuance of Purchase Order for Materials of Storm Drainage Ponds | 2026-12-14 → 2026-12-21 (+7d) | 2026-12-20 → 2026-12-27 (+7d) | -121d → -127d |
| MF | **Manufacturing of Material** |  | 2027-03-04 → 2027-03-15 (+11d) |  |
| TE | **Storm Drainage Ponds** | 2026-12-21 → 2026-12-28 (+7d) | 2027-03-04 → 2027-03-15 (+11d) |  |
| PRO-DPO-CV-MF-10 | Manufacturing of Materials of Storm Drainage Ponds | 2026-12-21 → 2026-12-28 (+7d) | 2027-03-04 → 2027-03-15 (+11d) | -121d → -127d |
| 1DL | **1st Material Delivery & Site Inspection** |  | 2027-03-13 → 2027-03-20 (+7d) |  |
| TE2 | **Storm Drainage Ponds** | 2027-03-06 → 2027-03-16 (+10d) | 2027-03-13 → 2027-03-20 (+7d) |  |
| PRO-DPO-CV-1DL-10 | 1ST Material Delivery for Materials of Drainage Ponds | 2027-03-06 → 2027-03-16 (+10d) | 2027-03-13 → 2027-03-20 (+7d) | -121d → -127d |
| DL | **Material Delivery & Site Inspection** |  | 2027-03-30 → 2027-04-06 (+7d) |  |
| TE3 | **Storm Drainage Ponds** | 2027-03-15 → 2027-03-22 (+7d) | 2027-03-30 → 2027-04-06 (+7d) |  |
| PRO-DPO-CV-DL-10 | Material Delivery & Site Inspection for Materials of Storm Drainage Ponds | 2027-03-15 → 2027-03-22 (+7d) | 2027-03-30 → 2027-04-06 (+7d) | -122d → -128d |
| SW | **Sewage Network** |  | 2026-12-21 → 2026-12-28 (+7d) |  |
| 1DL | **1st Material Delivery & Site Inspection** |  | 2026-12-16 → 2026-12-23 (+7d) |  |
| 1 | **Main Line Sections** |  | 2026-12-15 → 2026-12-22 (+7d) |  |
| PRO-SW-1DL-100 | 1ST Material Delivery for Main Line Pipes of Sewage Network |  | 2026-11-17 → 2026-11-24 (+7d) | -67d → -73d |
| PRO-SW-1DL-110 | 1ST Material Delivery for Manholes of Sewage Network |  | 2026-12-15 → 2026-12-22 (+7d) | -89d → -95d |
| 3 | **Testing and Finishes** |  | 2026-12-16 → 2026-12-23 (+7d) |  |
| PRO-SW-1DL-120 | 1ST Material Delivery for Manholes Covers of Sewage Network |  | 2026-12-16 → 2026-12-23 (+7d) | -84d → -90d |
| DL | **Material Delivery & Site Inspection** |  | 2026-12-21 → 2026-12-28 (+7d) |  |
| 1 | **Main Line Sections** |  | 2026-12-21 → 2026-12-28 (+7d) |  |
| PRO-R25-SW-DL-100 | Material Delivery & Site Inspection of Main Line Pipes for Sewage Network |  | 2026-12-21 → 2026-12-28 (+7d) | -84d → -90d |
| PRO-R25-SW-DL-110 | Material Delivery & Site Inspection of Manholes for Sewage Network |  | 2026-12-17 → 2026-12-24 (+7d) | -89d → -95d |
| 3 | **Testing and Finishes** |  | 2026-12-19 → 2026-12-26 (+7d) |  |
| PRO-R25-SW-DL-120 | Material Delivery & Site Inspection of Manholes Covers for Sewage Network |  | 2026-12-19 → 2026-12-26 (+7d) | -84d → -90d |
| TSE | **Treated Sewage Effluent (Tse)** | 2026-11-16 → 2026-11-23 (+7d) | 2027-01-14 → 2027-01-21 (+7d) |  |
| PO | **Issuance of Purchase Orders** | 2026-11-16 → 2026-11-23 (+7d) | 2026-11-23 → 2026-11-30 (+7d) |  |
| PRO-TSE-PO-120 | Issuance of Purchase Order for Materials of Treated Sewage Effluent (Tse) | 2026-11-16 → 2026-11-23 (+7d) | 2026-11-23 → 2026-11-30 (+7d) | -106d → -112d |
| MF | **Manufacturing of Material** | 2026-11-24 → 2026-12-01 (+7d) | 2026-12-21 → 2026-12-28 (+7d) |  |
| PRO-TSE-MF-120 | Manufacturing of Materials for Treated Sewage Effluent (Tse) | 2026-11-24 → 2026-12-01 (+7d) | 2026-12-21 → 2026-12-28 (+7d) | -106d → -112d |

| ID | Task | Start | Finish | Total float |
| --- | --- | --- | --- | --- |
| 1DL | **1st Material Delivery & Site Inspection** | 2026-12-22 → 2026-12-29 (+7d) | 2026-12-29 → 2027-01-05 (+7d) |  |
| PRO-TSE-1DL-120 | 1ST Material Delivery for Materials of Treated Sewage Effluent (Tse) | 2026-12-22 → 2026-12-29 (+7d) | 2026-12-29 → 2027-01-05 (+7d) | -106d → -112d |
| DL | **Material Delivery & Site Inspection** | 2026-12-30 → 2027-01-06 (+7d) | 2027-01-14 → 2027-01-21 (+7d) |  |
| PRO-R25-TSE-DL-120 | Material Delivery & Site Inspection of Materials for Treated Sewage Effluent (Tse) | 2026-12-30 → 2027-01-06 (+7d) | 2027-01-14 → 2027-01-21 (+7d) | -106d → -112d |
| PW | **Potable Water Network** |  | 2027-04-24 → 2027-05-01 (+7d) |  |
| PO | **Issuance of Purchase Orders** |  | 2026-11-28 → 2026-12-05 (+7d) |  |
| 3 | **Fire Hydrant** | 2026-11-16 → 2026-11-23 (+7d) | 2026-11-21 → 2026-11-28 (+7d) |  |
| PRO-PW-PO-120 | Issuance of Purchase Order for Fire Hydrants of Potable Water Network | 2026-11-16 → 2026-11-23 (+7d) | 2026-11-21 → 2026-11-28 (+7d) | -110d → -116d |
| 4 | **Testing and Finishes** | 2026-11-22 → 2026-11-29 (+7d) | 2026-11-28 → 2026-12-05 (+7d) |  |
| PRO-PW-PO-130 | Issuance of Purchase Order for Surface Box of Potable Water Network | 2026-11-22 → 2026-11-29 (+7d) | 2026-11-28 → 2026-12-05 (+7d) | -110d → -116d |
| MF | **Manufacturing of Material** |  | 2027-01-25 → 2027-02-01 (+7d) |  |
| 1 | **Main Line Sections** |  | 2026-12-13 → 2026-12-20 (+7d) |  |
| PRO-PW-MF-110 | Manufacturing of Valves for Potable Water Network | 2026-11-16 → 2026-11-23 (+7d) | 2026-12-13 → 2026-12-20 (+7d) | -65d → -71d |
| 3 | **Fire Hydrant** | 2026-12-14 → 2026-12-21 (+7d) | 2026-12-30 → 2027-01-06 (+7d) |  |
| PRO-PW-MF-120 | Manufacturing of Fire Hydrants for Potable Water Network | 2026-12-14 → 2026-12-21 (+7d) | 2026-12-30 → 2027-01-06 (+7d) | -65d → -71d |
| 4 | **Testing and Finishes** | 2026-11-29 → 2026-12-06 (+7d) | 2027-01-25 → 2027-02-01 (+7d) |  |
| PRO-PW-MF-130 | Manufacturing for Surface Box of Potable Water Network | 2026-11-29 → 2026-12-06 (+7d) | 2027-01-25 → 2027-02-01 (+7d) | -96d → -102d |
| 1DL | **1st Material Delivery & Site Inspection** |  | 2027-02-02 → 2027-02-09 (+7d) |  |
| 1 | **Main Line Sections** |  | 2027-02-02 → 2027-02-09 (+7d) |  |
| PRO-PW-1DL-110 | 1ST Material Delivery for Valves of Potable Water Network | 2027-01-26 → 2027-02-02 (+7d) | 2027-02-02 → 2027-02-09 (+7d) | -95d → -101d |
| 3 | **Fire Hydrant** | 2027-01-26 → 2027-02-02 (+7d) | 2027-02-02 → 2027-02-09 (+7d) |  |
| PRO-PW-1DL-120 | 1ST Material Delivery for Fire Hydrants of Potable Water Network | 2027-01-26 → 2027-02-02 (+7d) | 2027-02-02 → 2027-02-09 (+7d) | -87d → -93d |
| 4 | **Testing and Finishes** | 2027-01-26 → 2027-02-02 (+7d) | 2027-02-02 → 2027-02-09 (+7d) |  |
| PRO-PW-1DL-130 | 1ST Material Delivery for Finishes of Potable Water Network | 2027-01-26 → 2027-02-02 (+7d) | 2027-02-02 → 2027-02-09 (+7d) | -88d → -94d |
| DL | **Material Delivery & Site Inspection** |  | 2027-04-24 → 2027-05-01 (+7d) |  |
| 1 | **Main Line Sections** |  | 2027-02-27 → 2027-03-06 (+7d) |  |
| PRO-R25-PW-DL-110 | Material Delivery & Site Inspection of Valves for Potable Water Network | 2027-02-03 → 2027-02-10 (+7d) | 2027-02-27 → 2027-03-06 (+7d) | -95d → -101d |
| 3 | **Fire Hydrant** | 2027-02-03 → 2027-02-10 (+7d) | 2027-02-09 → 2027-02-16 (+7d) |  |
| PRO-R25-PW-DL-120 | Material Delivery & Site Inspection of Fire Hydrants for Potable Water Network | 2027-02-03 → 2027-02-10 (+7d) | 2027-02-09 → 2027-02-16 (+7d) | -83d → -89d |
| 4 | **Testing and Finishes** | 2027-02-03 → 2027-02-10 (+7d) | 2027-04-24 → 2027-05-01 (+7d) |  |
| PRO-R25-PW-DL-130 | Material Delivery & Site Inspection for Finishes of Potable Water Network | 2027-02-03 → 2027-02-10 (+7d) | 2027-04-24 → 2027-05-01 (+7d) | -88d → -94d |
| IR | **Irrigation Network** | 2026-11-29 → 2026-12-06 (+7d) | 2027-02-23 → 2027-03-02 (+7d) |  |
| PO | **Issuance of Purchase Orders** | 2026-11-29 → 2026-12-06 (+7d) | 2026-12-08 → 2026-12-15 (+7d) |  |
| 1 | **Main Line Pipes** | 2026-11-29 → 2026-12-06 (+7d) | 2026-12-08 → 2026-12-15 (+7d) |  |
| PRO-IR-PO-100 | Issuance of Purchase Order for Main Line Pipes of Irrigation Network | 2026-11-29 → 2026-12-06 (+7d) | 2026-12-03 → 2026-12-10 (+7d) | -110d → -116d |
| PRO-IR-PO-110 | Issuance of Purchase Order for Valves of Irrigation Network | 2026-12-05 → 2026-12-12 (+7d) | 2026-12-08 → 2026-12-15 (+7d) | -110d → -116d |
| MF | **Manufacturing of Material** | 2026-12-05 → 2026-12-12 (+7d) | 2027-01-21 → 2027-01-28 (+7d) |  |
| 1 | **Main Line Pipes** | 2026-12-05 → 2026-12-12 (+7d) | 2027-01-21 → 2027-01-28 (+7d) |  |
| PRO-IR-MF-100 | Manufacturing of Main Line Pipes for Irrigation Network | 2026-12-05 → 2026-12-12 (+7d) | 2026-12-28 → 2027-01-04 (+7d) | -94d → -100d |
| PRO-IR-MF-110 | Manufacturing of Valves for Irrigation Network | 2026-12-29 → 2027-01-05 (+7d) | 2027-01-21 → 2027-01-28 (+7d) | -94d → -100d |
| 1DL | **1st Material Delivery & Site Inspection** | 2026-12-29 → 2027-01-05 (+7d) | 2027-01-30 → 2027-02-06 (+7d) |  |
| 1 | **Main Line Pipes** | 2026-12-29 → 2027-01-05 (+7d) | 2027-01-30 → 2027-02-06 (+7d) |  |
| PRO-IR-1DL-100 | 1ST Material Delivery for Main Line Pipes of Irrigation Network | 2026-12-29 → 2027-01-05 (+7d) | 2027-01-05 → 2027-01-12 (+7d) | -94d → -100d |
| PRO-IR-1DL-110 | 1ST Material Delivery for Valves of Irrigation Network | 2027-01-23 → 2027-01-30 (+7d) | 2027-01-30 → 2027-02-06 (+7d) | -94d → -100d |
| DL | **Material Delivery & Site Inspection** | 2027-01-06 → 2027-01-13 (+7d) | 2027-02-23 → 2027-03-02 (+7d) |  |
| 1 | **Main Line Pipes** | 2027-01-06 → 2027-01-13 (+7d) | 2027-02-23 → 2027-03-02 (+7d) |  |
| PRO-R25-IR-DL-100 | Material Delivery & Site Inspection of Main Line Pipes for Irrigation Network | 2027-01-06 → 2027-01-13 (+7d) | 2027-01-30 → 2027-02-06 (+7d) | -94d → -100d |
| PRO-R25-IR-DL-110 | Material Delivery & Site Inspection of Valves for Irrigation Network | 2027-01-31 → 2027-02-07 (+7d) | 2027-02-23 → 2027-03-02 (+7d) | -94d → -100d |
| MV | **Medium Voltage Network** | 2026-12-09 → 2026-12-16 (+7d) | 2027-02-23 → 2027-03-02 (+7d) |  |
| PO | **Issuance of Purchase Orders** | 2026-12-09 → 2026-12-16 (+7d) | 2026-12-15 → 2026-12-22 (+7d) |  |
| PRO-MV-PO-100 | Issuance of Purchase Order for Medium Voltage Materials of Medium Voltage Network | 2026-12-09 → 2026-12-16 (+7d) | 2026-12-15 → 2026-12-22 (+7d) | -110d → -116d |
| MF | **Manufacturing of Material** | 2026-12-16 → 2026-12-23 (+7d) | 2027-01-09 → 2027-01-16 (+7d) |  |
| PRO-MV-MF-100 | Manufacturing of Medium Voltage Materials for Medium Voltage Network | 2026-12-16 → 2026-12-23 (+7d) | 2027-01-09 → 2027-01-16 (+7d) | -87d → -93d |
| 1DL | **1st Material Delivery & Site Inspection** | 2027-01-10 → 2027-01-17 (+7d) | 2027-01-17 → 2027-01-24 (+7d) |  |
| PRO-MV-1DL-100 | 1ST Material Delivery for Medium Voltage Materials of Medium Voltage Network | 2027-01-10 → 2027-01-17 (+7d) | 2027-01-17 → 2027-01-24 (+7d) | -87d → -93d |
| DL | **Material Delivery & Site Inspection** | 2027-01-31 → 2027-02-07 (+7d) | 2027-02-23 → 2027-03-02 (+7d) |  |
| PRO-MV-DL-100 | Material Delivery & Site Inspection of Medium Voltage Materials for Medium Voltage Network | 2027-01-31 → 2027-02-07 (+7d) | 2027-02-23 → 2027-03-02 (+7d) | -93d → -99d |
| LV | **Low Voltage Network** | 2026-11-16 → 2026-11-23 (+7d) | 2027-04-26 → 2027-05-03 (+7d) |  |
| PO | **Issuance of Purchase Orders** | 2026-11-16 → 2026-11-23 (+7d) | 2026-12-17 → 2026-12-24 (+7d) |  |
| 1 | **Main Low Voltage Cables Works** | 2026-11-16 → 2026-11-23 (+7d) | 2026-11-23 → 2026-11-30 (+7d) |  |
| PRO-LV-ML-PO-100 | Issuance of Purchase Order for Main Low Voltage Cables of Low Voltage Network | 2026-11-16 → 2026-11-23 (+7d) | 2026-11-23 → 2026-11-30 (+7d) | -122d → -128d |
| 2 | **Service Low Voltage Cables Works** | 2026-11-16 → 2026-11-23 (+7d) | 2026-11-23 → 2026-11-30 (+7d) |  |
| PRO-LV-HC-PO-100 | Issuance of Purchase Order for Service Low Voltage Cables of Low Voltage Network | 2026-11-16 → 2026-11-23 (+7d) | 2026-11-23 → 2026-11-30 (+7d) | -121d → -127d |
| 3 | **Distribution Pillar Works** | 2026-11-24 → 2026-12-01 (+7d) | 2026-12-09 → 2026-12-16 (+7d) |  |
| PRO-LV-DP-PO-100 | Issuance of Purchase Order for Distribution Pillars of Low Voltage Network | 2026-11-24 → 2026-12-01 (+7d) | 2026-12-01 → 2026-12-08 (+7d) | -121d → -127d |
| PRO-LV-DP-PO-110 | Issuance of Purchase Order for Low Voltage Earthing of Low Voltage Network | 2026-12-02 → 2026-12-09 (+7d) | 2026-12-09 → 2026-12-16 (+7d) | -121d → -127d |
| 4 | **Termination and Testing Works** | 2026-12-10 → 2026-12-17 (+7d) | 2026-12-17 → 2026-12-24 (+7d) |  |
| PRO-LV-TT-PO-100 | Issuance of Purchase Order for Cable Lugs of Low Voltage Network | 2026-12-10 → 2026-12-17 (+7d) | 2026-12-17 → 2026-12-24 (+7d) | -121d → -127d |
| MF | **Manufacturing of Material** | 2026-11-24 → 2026-12-01 (+7d) | 2027-03-13 → 2027-03-20 (+7d) |  |
| 1 | **Main Low Voltage Cables Works** | 2026-11-24 → 2026-12-01 (+7d) | 2026-12-28 → 2027-01-04 (+7d) |  |

| ID | Task | Start | Finish | Total float |
| --- | --- | --- | --- | --- |
| PRO-LV-ML-MF-100 | Manufacturing of Main Low Voltage Cables for Low Voltage Network | 2026-11-24 → 2026-12-01 (+7d) | 2026-12-28 → 2027-01-04 (+7d) | -122d → -128d |
| 2 | **Service Low Voltage Cables Works** | 2026-11-24 → 2026-12-01 (+7d) | 2026-12-28 → 2027-01-04 (+7d) |  |
| PRO-LV-HC-MF-100 | Manufacturing of Service Low Voltage Cables for Low Voltage Network | 2026-11-24 → 2026-12-01 (+7d) | 2026-12-28 → 2027-01-04 (+7d) | -100d → -106d |
| 3 | **Distribution Pillar Works** | 2026-12-02 → 2026-12-09 (+7d) | 2027-01-25 → 2027-02-01 (+7d) |  |
| PRO-LV-DP-MF-100 | Manufacturing of Distribution Pillars for Low Voltage Network | 2026-12-02 → 2026-12-09 (+7d) | 2027-01-17 → 2027-01-24 (+7d) | -107d → -113d |
| PRO-LV-DP-MF-110 | Manufacturing of Low Voltage Earthing for Low Voltage Network | 2026-12-10 → 2026-12-17 (+7d) | 2027-01-25 → 2027-02-01 (+7d) | -114d → -120d |
| 4 | **Termination and Testing Works** | 2026-12-19 → 2026-12-26 (+7d) | 2027-03-13 → 2027-03-20 (+7d) |  |
| PRO-LV-TT-MF-100 | Manufacturing of Cable Lugs for Low Voltage Network | 2026-12-19 → 2026-12-26 (+7d) | 2027-03-13 → 2027-03-20 (+7d) | -121d → -127d |
| 1DL | **1st Delivery of Material to Site** | 2026-12-29 → 2027-01-05 (+7d) | 2027-03-14 → 2027-03-21 (+7d) |  |
| 1 | **Main Low Voltage Cables Works** | 2026-12-29 → 2027-01-05 (+7d) | 2027-02-06 → 2027-02-13 (+7d) |  |
| PRO-LV-ML-1DL-100 | 1ST Material Delivery for Main Low Voltage Cables of Low Voltage Network | 2026-12-29 → 2027-01-05 (+7d) | 2027-02-06 → 2027-02-13 (+7d) | -122d → -128d |
| 2 | **Service Low Voltage Cables Works** | 2027-02-07 → 2027-02-14 (+7d) | 2027-02-14 → 2027-02-21 (+7d) |  |
| PRO-LV-HC-1DL-100 | 1ST Material Delivery for Service Low Voltage Cables of Low Voltage Network | 2027-02-07 → 2027-02-14 (+7d) | 2027-02-14 → 2027-02-21 (+7d) | -122d → -128d |
| 3 | **Distribution Pillar Works** | 2027-02-15 → 2027-02-22 (+7d) | 2027-03-02 → 2027-03-13 (+11d) |  |
| PRO-LV-DP-1DL-100 | 1ST Material Delivery for Distribution Pillars of Low Voltage Network | 2027-02-15 → 2027-02-22 (+7d) | 2027-02-22 → 2027-03-01 (+7d) | -122d → -128d |
| PRO-LV-DP-1DL-110 | 1ST Material Delivery for Low Voltage Earthing of Low Voltage Network | 2027-02-23 → 2027-03-02 (+7d) | 2027-03-02 → 2027-03-13 (+11d) | -122d → -128d |
| 4 | **Termination and Testing Works** | 2027-03-03 → 2027-03-14 (+11d) | 2027-03-14 → 2027-03-21 (+7d) |  |
| PRO-LV-TT-1DL-100 | 1ST Material Delivery for Cable Lugs of Low Voltage Network | 2027-03-03 → 2027-03-14 (+11d) | 2027-03-14 → 2027-03-21 (+7d) | -122d → -128d |
| DL | **Delivery of Material to Site** | 2027-02-07 → 2027-02-14 (+7d) | 2027-04-26 → 2027-05-03 (+7d) |  |
| 1 | **Main Low Voltage Cables Works** | 2027-02-07 → 2027-02-14 (+7d) | 2027-02-14 → 2027-02-21 (+7d) |  |
| PRO-LV-ML-DL-100 | Material Delivery of Main Low Voltage Cables for Low Voltage Network | 2027-02-07 → 2027-02-14 (+7d) | 2027-02-14 → 2027-02-21 (+7d) | -114d → -120d |
| 2 | **Service Low Voltage Cables Works** | 2027-02-15 → 2027-02-22 (+7d) | 2027-03-14 → 2027-03-21 (+7d) |  |
| PRO-LV-HC-DL-100 | Material Delivery of Service Low Voltage Cables for Low Voltage Network | 2027-02-15 → 2027-02-22 (+7d) | 2027-03-14 → 2027-03-21 (+7d) | -114d → -120d |
| 3 | **Distribution Pillar Works** | 2027-03-14 → 2027-03-21 (+7d) | 2027-04-05 → 2027-04-12 (+7d) |  |
| PRO-LV-DP-DL-120 | Material Delivery of Low Voltage Earthing for Low Voltage Network | 2027-03-14 → 2027-03-21 (+7d) | 2027-04-05 → 2027-04-12 (+7d) | -114d → -120d |
| PRO-LV-DP-DL-100 | Material Delivery of Distribution Pillars for Low Voltage Network | 2027-03-15 → 2027-03-22 (+7d) | 2027-04-05 → 2027-04-12 (+7d) | -114d → -120d |
| 4 | **Termination and Testing Works** | 2027-04-06 → 2027-04-13 (+7d) | 2027-04-26 → 2027-05-03 (+7d) |  |
| PRO-LV-TT-DL-100 | Material Delivery of Cable Lugs for Low Voltage Network | 2027-04-06 → 2027-04-13 (+7d) | 2027-04-26 → 2027-05-03 (+7d) | -91d → -97d |
| SL | **Street Lighting Network** |  | 2027-05-10 → 2027-05-23 (+13d) |  |
| MF | **Manufacturing of Material** | 2026-12-09 → 2026-12-16 (+7d) | 2027-03-28 → 2027-04-04 (+7d) |  |
| 1 | **Cabling Works** | 2026-12-09 → 2026-12-16 (+7d) | 2026-12-31 → 2027-01-07 (+7d) |  |
| PRO-SL-MF-100 | Manufacturing of Lighting Cables for Street Lighting Network | 2026-12-09 → 2026-12-16 (+7d) | 2026-12-31 → 2027-01-07 (+7d) | -110d → -116d |
| 2 | **Lighting Poles Works** | 2027-01-02 → 2027-01-09 (+7d) | 2027-01-25 → 2027-02-01 (+7d) |  |
| PRO-SL-MF-110 | Manufacturing of Lighting Poles Foundations for Street Lighting Network | 2027-01-02 → 2027-01-09 (+7d) | 2027-01-25 → 2027-02-01 (+7d) | -110d → -116d |
| PRO-SL-MF-120 | Manufacturing of Lighting Poles for Street Lighting Network | 2027-01-02 → 2027-01-09 (+7d) | 2027-01-25 → 2027-02-01 (+7d) | -104d → -110d |
| PRO-SL-MF-140 | Manufacturing of Lighting Fixtures for Street Lighting Network | 2027-01-02 → 2027-01-09 (+7d) | 2027-01-25 → 2027-02-01 (+7d) | -104d → -110d |
| 3 | **Distribution Panel Board** | 2027-01-26 → 2027-02-02 (+7d) | 2027-03-01 → 2027-03-08 (+7d) |  |
| PRO-SL-MF-160 | Manufacturing of Distrubution Panel Boards for Street Lighting Network | 2027-01-26 → 2027-02-02 (+7d) | 2027-03-01 → 2027-03-08 (+7d) | -104d → -110d |
| 4 | **Earthing System Works** | 2026-12-09 → 2026-12-16 (+7d) | 2027-01-24 → 2027-01-31 (+7d) |  |
| PRO-SL-MF-150 | Manufacturing of Lighting Earthing for Street Lighting Network | 2026-12-09 → 2026-12-16 (+7d) | 2027-01-24 → 2027-01-31 (+7d) | -94d → -100d |
| 5 | **Termination and Testing Works** | 2026-12-09 → 2026-12-16 (+7d) | 2027-03-28 → 2027-04-04 (+7d) |  |
| PRO-SL-MF-130 | Manufacturing of Fuse Boxes for Street Lighting Network | 2026-12-09 → 2026-12-16 (+7d) | 2027-02-28 → 2027-03-07 (+7d) | -83d → -89d |
| PRO-SL-MF-170 | Manufacturing of Cable Lugs for Street Lighting Network | 2027-03-01 → 2027-03-08 (+7d) | 2027-03-28 → 2027-04-04 (+7d) | -83d → -89d |
| 1DL | **1st Material Delivery & Site Inspection** | 2027-01-02 → 2027-01-09 (+7d) | 2027-04-11 → 2027-04-18 (+7d) |  |
| 1 | **Cabling Works** | 2027-01-02 → 2027-01-09 (+7d) | 2027-01-07 → 2027-01-14 (+7d) |  |
| PRO-SL-1DL-100 | 1ST Material Delivery for Lighting Cables of Street Lighting Network | 2027-01-02 → 2027-01-09 (+7d) | 2027-01-07 → 2027-01-14 (+7d) | -95d → -101d |
| 2 | **Lighting Poles Works** | 2027-01-26 → 2027-02-02 (+7d) | 2027-02-15 → 2027-02-22 (+7d) |  |
| PRO-SL-1DL-110 | 1ST Material Delivery for Lighting Poles Foundations of Street Lighting Network | 2027-01-26 → 2027-02-02 (+7d) | 2027-02-01 → 2027-02-08 (+7d) | -110d → -116d |
| PRO-SL-1DL-120 | 1ST Material Delivery for Lighting Poles of Street Lighting Network | 2027-02-02 → 2027-02-09 (+7d) | 2027-02-08 → 2027-02-15 (+7d) | -107d → -113d |
| PRO-SL-1DL-140 | 1ST Material Delivery for Lighting Fixtures of Street Lighting Network | 2027-02-09 → 2027-02-16 (+7d) | 2027-02-15 → 2027-02-22 (+7d) | -107d → -113d |
| 3 | **Distribution Panel Board** | 2027-03-02 → 2027-03-13 (+11d) | 2027-03-08 → 2027-03-18 (+10d) |  |
| PRO-SL-1DL-160 | 1ST Material Delivery for Distrubution Panel Boards of Street Lighting Network | 2027-03-02 → 2027-03-13 (+11d) | 2027-03-08 → 2027-03-18 (+10d) | -104d → -110d |
| 5 | **Termination and Testing Works** | 2027-03-13 → 2027-03-20 (+7d) | 2027-04-04 → 2027-04-11 (+7d) |  |
| PRO-SL-1DL-130 | 1ST Material Delivery for Fuse Boxes of Street Lighting Network | 2027-03-13 → 2027-03-20 (+7d) | 2027-03-18 → 2027-03-25 (+7d) | -89d → -95d |
| PRO-SL-1DL-170 | 1ST Material Delivery for Cable Lugs of Street Lighting Network | 2027-03-29 → 2027-04-05 (+7d) | 2027-04-04 → 2027-04-11 (+7d) | -83d → -89d |
| 4 | **Earthing System Works** | 2027-04-05 → 2027-04-12 (+7d) | 2027-04-11 → 2027-04-18 (+7d) |  |
| PRO-SL-1DL-150 | 1ST Material Delivery for Lighting Earthing of Street Lighting Network | 2027-04-05 → 2027-04-12 (+7d) | 2027-04-11 → 2027-04-18 (+7d) | -83d → -89d |
| DL | **Material Delivery & Site Inspection** | 2027-01-09 → 2027-01-16 (+7d) | 2027-05-10 → 2027-05-23 (+13d) |  |
| 1 | **Cabling Works** | 2027-01-09 → 2027-01-16 (+7d) | 2027-02-01 → 2027-02-08 (+7d) |  |
| PRO-R25-SL-DL-100 | Material Delivery & Site Inspection of Lighting Cables for Street Lighting Network | 2027-01-09 → 2027-01-16 (+7d) | 2027-02-01 → 2027-02-08 (+7d) | -95d → -101d |
| 2 | **Lighting Poles Works** | 2027-01-26 → 2027-02-02 (+7d) | 2027-03-18 → 2027-03-25 (+7d) |  |
| PRO-R25-SL-DL-110 | Material Delivery & Site Inspection of Lighting Poles Foundations for Street Lighting Network | 2027-01-26 → 2027-02-02 (+7d) | 2027-02-18 → 2027-02-25 (+7d) | -110d → -116d |
| PRO-R25-SL-DL-120 | Material Delivery & Site Inspection of Lighting Poles for Street Lighting Network | 2027-02-20 → 2027-02-27 (+7d) | 2027-03-18 → 2027-03-25 (+7d) | -110d → -116d |
| PRO-R25-SL-DL-140 | Material Delivery & Site Inspection of Lighting Fixtures for Street Lighting Network | 2027-02-20 → 2027-02-27 (+7d) | 2027-03-18 → 2027-03-25 (+7d) | -110d → -116d |
| 3 | **Distribution Panel Board** | 2027-03-23 → 2027-03-30 (+7d) | 2027-04-15 → 2027-04-22 (+7d) |  |
| PRO-R25-SL-DL-160 | Material Delivery & Site Inspection of Distrubution Panel Boards for Street Lighting Network | 2027-03-23 → 2027-03-30 (+7d) | 2027-04-15 → 2027-04-22 (+7d) | -113d → -119d |
| 4 | **Termination and Testing Works** | 2027-04-17 → 2027-04-24 (+7d) | 2027-05-10 → 2027-05-23 (+13d) |  |
| PRO-R25-SL-DL-130 | Material Delivery & Site Inspection of Fuse Boxes for Street Lighting Network | 2027-04-17 → 2027-04-24 (+7d) | 2027-05-10 → 2027-05-23 (+13d) | -113d → -119d |
| PRO-R25-SL-DL-170 | Material Delivery & Site Inspection of Cable Lugs for Street Lighting Network | 2027-04-17 → 2027-04-24 (+7d) | 2027-05-10 → 2027-05-23 (+13d) | -93d → -99d |
| 5 | **Earthing System Works** | 2027-04-17 → 2027-04-24 (+7d) | 2027-05-10 → 2027-05-23 (+13d) |  |

| ID | Task | Start | Finish | Total float |
| --- | --- | --- | --- | --- |
| PRO-R25-SL-DL-150 | Material Delivery & Site Inspection of Lighting Earthing for Street Lighting Network | 2027-04-17 → 2027-04-24 (+7d) | 2027-05-10 → 2027-05-23 (+13d) | -93d → -99d |
| TE | **Telecom and Light Current Network** | 2026-12-09 → 2026-12-16 (+7d) | 2027-03-30 → 2027-04-06 (+7d) |  |
| PO | **Issuance of Purchase Orders** | 2026-12-09 → 2026-12-16 (+7d) | 2026-12-31 → 2027-01-07 (+7d) |  |
| 1 | **Ducts Works** | 2026-12-09 → 2026-12-16 (+7d) | 2026-12-16 → 2026-12-23 (+7d) |  |
| PRO-TE-PO-100 | Issuance of Purchase Order for Ducts forTelecom Network | 2026-12-09 → 2026-12-16 (+7d) | 2026-12-16 → 2026-12-23 (+7d) | -89d → -95d |
| 3 | **Manholes Works** | 2026-12-09 → 2026-12-16 (+7d) | 2026-12-16 → 2026-12-23 (+7d) |  |
| PRO-TE-PO-110 | Issuance of Purchase Order for Manholes forTelecom Network | 2026-12-09 → 2026-12-16 (+7d) | 2026-12-16 → 2026-12-23 (+7d) | -89d → -95d |
| 2 | **CCTV, Telephone, MSN, ACs System Works** | 2026-12-09 → 2026-12-16 (+7d) | 2026-12-31 → 2027-01-07 (+7d) |  |
| PRO-CTV-PO-100 | Issuance of Purchase Order for Civil and Finishes Works of CCTV Complete System | 2026-12-09 → 2026-12-16 (+7d) | 2026-12-31 → 2027-01-07 (+7d) | -89d → -95d |
| MF | **Manufacturing of Material** | 2026-12-17 → 2026-12-24 (+7d) | 2027-03-08 → 2027-03-18 (+10d) |  |
| 1 | **Ducts Works** | 2026-12-17 → 2026-12-24 (+7d) | 2027-01-09 → 2027-01-16 (+7d) |  |
| PRO-TE-MF-100 | Manufacturing of Ducts for Telecom Network | 2026-12-17 → 2026-12-24 (+7d) | 2027-01-09 → 2027-01-16 (+7d) | -81d → -87d |
| 3 | **Manholes Works** | 2027-01-10 → 2027-01-17 (+7d) | 2027-02-01 → 2027-02-08 (+7d) |  |
| PRO-TE-MF-110 | Manufacturing of Manholes for Telecom Network | 2027-01-10 → 2027-01-17 (+7d) | 2027-02-01 → 2027-02-08 (+7d) | -81d → -87d |
| 2 | **CCTV, Telephone, MSN, ACs System Works** | 2027-02-02 → 2027-02-09 (+7d) | 2027-03-08 → 2027-03-18 (+10d) |  |
| PRO-CTV-MF-100 | Manufacturing of Civil and Finishes Works for CCTV Complete System | 2027-02-02 → 2027-02-09 (+7d) | 2027-03-08 → 2027-03-18 (+10d) | -66d → -72d |
| 1DL | **1st Material Delivery & Site Inspection** | 2027-01-10 → 2027-01-17 (+7d) | 2027-03-18 → 2027-03-25 (+7d) |  |
| 1 | **Ducts Works** | 2027-01-10 → 2027-01-17 (+7d) | 2027-01-16 → 2027-01-23 (+7d) |  |
| PRO-TE-1DL-100 | 1ST Material Delivery for Ducts of Telecom Network | 2027-01-10 → 2027-01-17 (+7d) | 2027-01-16 → 2027-01-23 (+7d) | -73d → -79d |
| 3 | **Manholes Works** | 2027-02-02 → 2027-02-09 (+7d) | 2027-02-08 → 2027-02-15 (+7d) |  |
| PRO-TE-1DL-110 | 1ST Material Delivery for Manholes of Telecom Network | 2027-02-02 → 2027-02-09 (+7d) | 2027-02-08 → 2027-02-15 (+7d) | -81d → -87d |
| 2 | **CCTV, Telephone, MSN, ACs System Works** | 2027-03-13 → 2027-03-20 (+7d) | 2027-03-18 → 2027-03-25 (+7d) |  |
| PRO-CTV-1DL-100 | 1ST Material Delivery for Civil and Finishes Works of CCTV Complete System | 2027-03-13 → 2027-03-20 (+7d) | 2027-03-18 → 2027-03-25 (+7d) | -66d → -72d |
| DL | **Material Delivery & Site Inspection** | 2027-01-17 → 2027-01-24 (+7d) | 2027-03-30 → 2027-04-06 (+7d) |  |
| 1 | **Ducts Works** | 2027-01-17 → 2027-01-24 (+7d) | 2027-02-02 → 2027-02-09 (+7d) |  |
| PRO-R25-TE-DL-100 | Material Delivery & Site Inspection for Ducts of Telecom Network | 2027-01-17 → 2027-01-24 (+7d) | 2027-02-02 → 2027-02-09 (+7d) | -73d → -79d |
| 3 | **Manholes Works** | 2027-02-09 → 2027-02-16 (+7d) | 2027-02-25 → 2027-03-04 (+7d) |  |
| PRO-R25-TE-DL-110 | Material Delivery & Site Inspection of Manholes for Telecom Network | 2027-02-09 → 2027-02-16 (+7d) | 2027-02-25 → 2027-03-04 (+7d) | -78d → -84d |
| 2 | **CCTV, Telephone, MSN, ACs System Works** | 2027-03-20 → 2027-03-27 (+7d) | 2027-03-30 → 2027-04-06 (+7d) |  |
| PRO-R25-CTV-DL-100 | Material Delivery & Site Inspection of for Civil and Finishes Works of CCTV Complete System | 2027-03-20 → 2027-03-27 (+7d) | 2027-03-30 → 2027-04-06 (+7d) | -66d → -72d |
| RD | **Road Works** |  | 2027-05-27 → 2027-06-03 (+7d) |  |
| PO | **Issuance of Purchase Orders** |  | 2026-12-17 → 2026-12-24 (+7d) |  |
| 1 | **Road Works** |  | 2026-11-23 → 2026-11-30 (+7d) |  |
| PRO-RD-PO-190 | Issuance of Purchase Order for Tack Coat Layer for Roads Network | 2026-11-16 → 2026-11-23 (+7d) | 2026-11-23 → 2026-11-30 (+7d) | -64d → -70d |
| 2 | **Pavement Works** | 2026-11-16 → 2026-11-23 (+7d) | 2026-12-01 → 2026-12-08 (+7d) |  |
| PRO-RD-PO-140 | Issuance of Purchase Order for Interlock Tiles of Landscaping | 2026-11-16 → 2026-11-23 (+7d) | 2026-11-23 → 2026-11-30 (+7d) | -73d → -79d |
| PRO-RD-PO-150 | Issuance of Purchase Order for Curbstones of Landscaping | 2026-11-24 → 2026-12-01 (+7d) | 2026-12-01 → 2026-12-08 (+7d) | -73d → -79d |
| 3 | **Traffic Signs Boards and Roads Marking** | 2026-12-02 → 2026-12-09 (+7d) | 2026-12-17 → 2026-12-24 (+7d) |  |
| PRO-RD-PO-160 | Issuance of Purchase Order for Traffic Signs Boards of Road Works | 2026-12-02 → 2026-12-09 (+7d) | 2026-12-09 → 2026-12-16 (+7d) | -73d → -79d |
| PRO-RD-PO-170 | Issuance of Purchase Order for Road Markings of Road Works | 2026-12-10 → 2026-12-17 (+7d) | 2026-12-17 → 2026-12-24 (+7d) | -66d → -72d |
| MF | **Manufacturing of Material** |  | 2027-03-24 → 2027-03-31 (+7d) |  |
| 1 | **Road Works** |  | 2027-01-20 → 2027-01-27 (+7d) |  |
| PRO-RD-MF-190 | Manufacturing of Tack Coat Layer for Roads Network | 2026-11-24 → 2026-12-01 (+7d) | 2027-01-20 → 2027-01-27 (+7d) | -64d → -70d |
| 2 | **Pavement Works** | 2027-01-21 → 2027-01-28 (+7d) | 2027-02-14 → 2027-02-21 (+7d) |  |
| PRO-RD-MF-140 | Manufacturing of Interlock Tiles for Landscaping | 2027-01-21 → 2027-01-28 (+7d) | 2027-02-14 → 2027-02-21 (+7d) | -64d → -70d |
| PRO-RD-MF-150 | Manufacturing of Curbstones for Landscaping | 2027-01-21 → 2027-01-28 (+7d) | 2027-02-13 → 2027-02-20 (+7d) | -52d → -58d |
| 3 | **Traffic Signs Boards and Roads Marking** | 2026-12-10 → 2026-12-17 (+7d) | 2027-03-24 → 2027-03-31 (+7d) |  |
| PRO-RD-MF-160 | Manufacturing of Traffic Signs Boards for Road Works | 2026-12-10 → 2026-12-17 (+7d) | 2027-03-16 → 2027-03-23 (+7d) | -73d → -79d |
| PRO-RD-MF-170 | Manufacturing of Road Markings for Road Works | 2026-12-19 → 2026-12-26 (+7d) | 2027-03-24 → 2027-03-31 (+7d) | -66d → -72d |
| 1DL | **1st Material Delivery & Site Inspection** |  | 2027-04-10 → 2027-04-17 (+7d) |  |
| 1 | **Road Works** |  | 2027-01-28 → 2027-02-04 (+7d) |  |
| PRO-RD-1DL-190 | 1ST Material Delivery for Tack Coat Layer for Roads Network | 2027-01-21 → 2027-01-28 (+7d) | 2027-01-28 → 2027-02-04 (+7d) | -54d → -60d |
| 2 | **Pavement Works** | 2027-02-15 → 2027-02-22 (+7d) | 2027-03-02 → 2027-03-13 (+11d) |  |
| PRO-RD-1DL-140 | 1ST Material Delivery for Interlock Tiles of Landscaping | 2027-02-15 → 2027-02-22 (+7d) | 2027-02-22 → 2027-03-01 (+7d) | -64d → -70d |
| PRO-RD-1DL-150 | 1ST Material Delivery for Curbstones of Landscaping | 2027-02-23 → 2027-03-02 (+7d) | 2027-03-02 → 2027-03-13 (+11d) | -60d → -66d |
| 3 | **Traffic Signs Boards and Roads Marking** | 2027-03-25 → 2027-04-01 (+7d) | 2027-04-10 → 2027-04-17 (+7d) |  |
| PRO-RD-1DL-170 | 1ST Material Delivery for Road Markings of Road Works | 2027-03-25 → 2027-04-01 (+7d) | 2027-04-01 → 2027-04-08 (+7d) | -66d → -72d |
| PRO-RD-1DL-160 | 1ST Material Delivery for Traffic Signs Boards of Road Works | 2027-04-03 → 2027-04-10 (+7d) | 2027-04-10 → 2027-04-17 (+7d) | -66d → -72d |
| DL | **Material Delivery & Site Inspection** |  | 2027-05-27 → 2027-06-03 (+7d) |  |
| 1 | **Pre-Bituminous Construction** |  | 2026-12-20 → 2026-12-27 (+7d) |  |
| PRO-R25-RD-DL-100 | Material Delivery & Site Inspection for Subgrade of Road Works |  | 2026-11-25 → 2026-12-02 (+7d) | -52.39d → -58.39d |
| PRO-R25-RD-DL-110 | Material Delivery & Site Inspection for Aggregate Base Course of Road Works |  | 2026-12-20 → 2026-12-27 (+7d) | -52.39d → -58.39d |
| 4 | **Bituminous Construction** |  | 2027-02-10 → 2027-02-17 (+7d) |  |
| PRO-R25-RD-DL-160 | Material Delivery & Site Inspection for Prime Coat Layer of Road Works |  | 2027-01-02 → 2027-01-09 (+7d) | -52.39d → -58.39d |
| PRO-R25-RD-DL-170 | Material Delivery & Site Inspection for Asphaltic Base Course Layer of Road Works |  | 2027-01-14 → 2027-01-21 (+7d) | -52.39d → -58.39d |
| PRO-RD-DL-200 | Material Delivery for Asphaltic Wearing Course Layer for Roads Network |  | 2027-01-27 → 2027-02-03 (+7d) | -52.39d → -58.39d |
| PRO-RD-DL-210 | Material Delivery for Tack Coat Layer for Roads Network | 2027-01-30 → 2027-02-06 (+7d) | 2027-02-10 → 2027-02-17 (+7d) | -54d → -60d |
| 2 | **Pavement Works** | 2027-02-23 → 2027-03-02 (+7d) | 2027-03-23 → 2027-03-30 (+7d) |  |
| PRO-R25-RD-DL-120 | Material Delivery & Site Inspection of Interlock Tiles for Landscaping | 2027-02-23 → 2027-03-02 (+7d) | 2027-03-07 → 2027-03-17 (+10d) | -64d → -70d |
| PRO-R25-RD-DL-130 | Material Delivery & Site Inspection of Curbstones for Landscaping | 2027-03-08 → 2027-03-18 (+10d) | 2027-03-23 → 2027-03-30 (+7d) | -64d → -70d |

| ID | Task | Start | Finish | Total float |
| --- | --- | --- | --- | --- |
| 3 | **Traffic Signs Boards and Roads Marking** | 2027-04-27 → 2027-05-04 (+7d) | 2027-05-27 → 2027-06-03 (+7d) |  |
| PRO-R25-RD-DL-150 | Material Delivery & Site Inspection of Road Markings For Road Works | 2027-04-27 → 2027-05-04 (+7d) | 2027-05-09 → 2027-05-22 (+13d) | -91d → -97d |
| PRO-R25-RD-DL-140 | Material Delivery & Site Inspection of Traffic Signs Boards For Road Works | 2027-05-10 → 2027-05-23 (+13d) | 2027-05-27 → 2027-06-03 (+7d) | -91d → -97d |
| 1 | **Superstructure Works** |  | 2027-01-03 → 2027-01-10 (+7d) |  |
| 1 | **Issuance of Purchase Orders** |  | 2026-11-23 → 2026-11-30 (+7d) |  |
| SL11 | **Storage Tank (TSE)** | 2026-11-16 → 2026-11-23 (+7d) | 2026-11-23 → 2026-11-30 (+7d) |  |
| PRO-TSE-CV-PO-30 | Issuance of Purchase Order for Works for Storage Tank (TSE) | 2026-11-16 → 2026-11-23 (+7d) | 2026-11-23 → 2026-11-30 (+7d) | -98d → -104d |
| 2 | **Manufacturing of Material** |  | 2026-12-09 → 2026-12-16 (+7d) |  |
| SL11 | **Storage Tank (TSE)** | 2026-11-24 → 2026-12-01 (+7d) | 2026-12-09 → 2026-12-16 (+7d) |  |
| PRO-TSE-CV-MF-40 | Manufacturing of Works for Storage Tank (TSE) | 2026-11-24 → 2026-12-01 (+7d) | 2026-12-09 → 2026-12-16 (+7d) | -73.42d → -79.42d |
| 3 | **1st Material Delivery & Site Inspection** |  | 2026-12-17 → 2026-12-24 (+7d) |  |
| SL1 | **Water Pump Station** |  | 2026-11-19 → 2026-11-26 (+7d) |  |
| PRO-LS-CV-1DL-40 | 1ST Material Delivery for Works of Water Pump Station |  | 2026-11-19 → 2026-11-26 (+7d) | -56.42d → -62.42d |
| SL11 | **Storage Tank (TSE)** | 2026-12-10 → 2026-12-17 (+7d) | 2026-12-17 → 2026-12-24 (+7d) |  |
| PRO-TSE-CV-1DL-50 | 1ST Material Delivery for Works for Storage Tank (TSE) | 2026-12-10 → 2026-12-17 (+7d) | 2026-12-17 → 2026-12-24 (+7d) | -73.42d → -79.42d |
| SL111 | **Control Room** |  | 2026-12-16 → 2026-12-23 (+7d) |  |
| PRO-TSE-CV-1DL-60 | 1ST Material Delivery for Works for Control Room |  | 2026-12-16 → 2026-12-23 (+7d) | -73.42d → -79.42d |
| SL | **Sewage Pump Stations** |  | 2026-12-10 → 2026-12-17 (+7d) |  |
| PRO-SPS-CV-1DL-10 | 1ST Material Delivery for Works of Sewage Pump Station |  | 2026-12-10 → 2026-12-17 (+7d) | -73.42d → -79.42d |
| SL12 | **Gaurd Room** | 2026-12-10 → 2026-12-17 (+7d) | 2026-12-17 → 2026-12-24 (+7d) |  |
| PRO-GR-CV-1DL-60 | 1ST Material Delivery for Materials for Gaurd Room | 2026-12-10 → 2026-12-17 (+7d) | 2026-12-17 → 2026-12-24 (+7d) | -73.42d → -79.42d |
| SL121 | **Boundary Fence** |  | 2026-12-13 → 2026-12-20 (+7d) |  |
| PRO-FE-CV-1DL-70 | 1ST Material Delivery for Materials for Boundary Fence |  | 2026-12-13 → 2026-12-20 (+7d) | -69.42d → -75.42d |
| 4 | **Material Delivery & Site Inspection** |  | 2027-01-03 → 2027-01-10 (+7d) |  |
| SL1 | **Water Pump Station** |  | 2026-11-23 → 2026-11-30 (+7d) |  |
| PRO-LS-CV-DL-50 | Material Delivery & Site Inspection for Works for Water Pump Station |  | 2026-11-23 → 2026-11-30 (+7d) | -55d → -61d |
| SL11 | **Storage Tank (TSE)** | 2026-11-24 → 2026-12-01 (+7d) | 2026-12-24 → 2026-12-31 (+7d) |  |
| PRO-TSE-CV-DL-60 | Material Delivery & Site Inspection for Works for Storage Tank (TSE) | 2026-11-24 → 2026-12-01 (+7d) | 2026-12-24 → 2026-12-31 (+7d) | -52.42d → -58.42d |
| SL111 | **Control Room** |  | 2026-12-30 → 2027-01-06 (+7d) |  |
| PRO-TSE-CV-DL-70 | Material Delivery & Site Inspection for Works for Control Room |  | 2026-12-30 → 2027-01-06 (+7d) | -72.42d → -78.42d |
| SL | **Sewage Pump Stations** |  | 2026-12-19 → 2026-12-26 (+7d) |  |
| PRO-SPS-CV-DL-10 | Material Delivery & Site Inspection for Works for Pump Station |  | 2026-12-19 → 2026-12-26 (+7d) | -72.42d → -78.42d |
| SL12 | **Gaurd Room** | 2026-12-19 → 2026-12-26 (+7d) | 2027-01-03 → 2027-01-10 (+7d) |  |
| PRO-GR-CV-DL-70 | Material Delivery & Site Inspection for Materials for Gaurd Room | 2026-12-19 → 2026-12-26 (+7d) | 2027-01-03 → 2027-01-10 (+7d) | -73.42d → -79.42d |
| SL121 | **Boundary Fence** |  | 2026-12-24 → 2026-12-31 (+7d) |  |
| PRO-FE-CV-DL-80 | Material Delivery & Site Inspection for Materials for Boundary Fence |  | 2026-12-24 → 2026-12-31 (+7d) | -73.42d → -79.42d |
| IR1 | **Softscape and Planting Works** | 2026-12-02 → 2026-12-09 (+7d) | 2027-03-22 → 2027-03-29 (+7d) |  |
| PO | **Issuance of Purchase Orders** | 2026-12-02 → 2026-12-09 (+7d) | 2026-12-15 → 2026-12-22 (+7d) |  |
| 1 | **Main Line Pipes** | 2026-12-02 → 2026-12-09 (+7d) | 2026-12-15 → 2026-12-22 (+7d) |  |
| PRO-IR-PO-140 | Issuance of Purchase Order for Softscape and Planting Works | 2026-12-02 → 2026-12-09 (+7d) | 2026-12-08 → 2026-12-15 (+7d) | -119d → -125d |
| PRO-IR-PO-150 | Issuance of Purchase Order for Site Furnishings (Seating Bench,Stone Boulders and Gravel) | 2026-12-09 → 2026-12-16 (+7d) | 2026-12-15 → 2026-12-22 (+7d) | -109d → -115d |
| MF | **Manufacturing of Material** | 2026-12-09 → 2026-12-16 (+7d) | 2027-02-23 → 2027-03-02 (+7d) |  |
| 1 | **Main Line Pipes** | 2026-12-09 → 2026-12-16 (+7d) | 2027-02-23 → 2027-03-02 (+7d) |  |
| PRO-IR-MF-140 | Manufacturing of Softscape and Planting Works | 2026-12-09 → 2026-12-16 (+7d) | 2027-02-16 → 2027-02-23 (+7d) | -119d → -125d |
| PRO-IR-MF-150 | Manufacturing of Valves for Site Furnishings (Seating Bench,Stone Boulders and Gravel) | 2026-12-16 → 2026-12-23 (+7d) | 2027-02-23 → 2027-03-02 (+7d) | -109d → -115d |
| 1DL | **1st Material Delivery & Site Inspection** | 2027-02-17 → 2027-02-24 (+7d) | 2027-03-02 → 2027-03-13 (+11d) |  |
| 1 | **Main Line Pipes** | 2027-02-17 → 2027-02-24 (+7d) | 2027-03-02 → 2027-03-13 (+11d) |  |
| PRO-IR-1DL-140 | 1ST Material Delivery for Softscape and Planting Works | 2027-02-17 → 2027-02-24 (+7d) | 2027-02-23 → 2027-03-02 (+7d) | -119d → -125d |
| PRO-IR-1DL-150 | 1ST Material Delivery for Site Furnishings (Seating Bench,Stone Boulders and Gravel) | 2027-02-24 → 2027-03-03 (+7d) | 2027-03-02 → 2027-03-13 (+11d) | -109d → -115d |
| DL | **Material Delivery & Site Inspection** | 2027-02-24 → 2027-03-03 (+7d) | 2027-03-22 → 2027-03-29 (+7d) |  |
| 1 | **Main Line Pipes** | 2027-02-24 → 2027-03-03 (+7d) | 2027-03-22 → 2027-03-29 (+7d) |  |
| PRO-R25-IR-DL-140 | Material Delivery & Site Inspection of Softscape and Planting Works | 2027-02-24 → 2027-03-03 (+7d) | 2027-03-07 → 2027-03-17 (+10d) | -119d → -125d |
| PRO-R25-IR-DL-150 | Material Delivery & Site Inspection of Site Furnishings (Seating Bench,Stone Boulders and Gravel) | 2027-03-08 → 2027-03-18 (+10d) | 2027-03-22 → 2027-03-29 (+7d) | -113d → -119d |
| LL | **Long Lead Time Items** |  | 2027-07-07 → 2027-07-14 (+7d) |  |
| 1 | **Superstructure Works** |  | 2027-07-07 → 2027-07-14 (+7d) |  |
| SL | **Sewage Pump Station** |  | 2027-01-20 → 2027-01-27 (+7d) |  |
| 3 | **Material Shipping/Custom Clearance/Delivery** | 2026-12-02 → 2026-12-09 (+7d) | 2026-12-26 → 2027-01-02 (+7d) |  |
| PRO-SPS-LL-SH/DL-10 | Material Delivery for Electromechanical Works for Pump Station | 2026-12-02 → 2026-12-09 (+7d) | 2026-12-26 → 2027-01-02 (+7d) | -18d → -24d |
| 4 | **Material Site Inspection** | 2026-12-27 → 2027-01-03 (+7d) | 2027-01-20 → 2027-01-27 (+7d) |  |
| PRO-SPS-LL-MSI-10 | Material Site Inspection for Electromechanical Works for Pump Station | 2026-12-27 → 2027-01-03 (+7d) | 2027-01-20 → 2027-01-27 (+7d) | -18d → -24d |
| SL1 | **Water Pump Station** |  | 2027-01-19 → 2027-01-26 (+7d) |  |
| 3 | **Material Shipping/Custom Clearance/Delivery** | 2026-12-02 → 2026-12-09 (+7d) | 2026-12-26 → 2027-01-02 (+7d) |  |
| PRO-LS-LL-SH/DL-20 | Material Delivery for Electromechanical Works for Water Pump Station | 2026-12-02 → 2026-12-09 (+7d) | 2026-12-26 → 2027-01-02 (+7d) | -17d → -23d |
| 4 | **Material Site Inspection** | 2026-12-27 → 2027-01-03 (+7d) | 2027-01-19 → 2027-01-26 (+7d) |  |
| PRO-LS-LL-MSI-20 | Material Site Inspection for Electromechanical Works for Water Pump Station | 2026-12-27 → 2027-01-03 (+7d) | 2027-01-19 → 2027-01-26 (+7d) | -17d → -23d |
| SL2 | **Storage Tank (TSE)** | 2026-12-14 → 2026-12-21 (+7d) | 2027-07-07 → 2027-07-14 (+7d) |  |
| 1 | **Issuance of Purchase Orders** | 2026-12-14 → 2026-12-21 (+7d) | 2026-12-21 → 2026-12-28 (+7d) |  |
| PRO-TSE-LL-PO-30 | Issuance of Purchase Order for Electromechanical Works for Storage Tank (TSE) | 2026-12-14 → 2026-12-21 (+7d) | 2026-12-21 → 2026-12-28 (+7d) | -115d → -121d |
| 2 | **Manufacturing of Material** | 2026-12-22 → 2026-12-29 (+7d) | 2027-05-13 → 2027-05-26 (+13d) |  |
| PRO-TSE-LL-MF-30 | Manufacturing of Electromechanical Works for Storage Tank (TSE) | 2026-12-22 → 2026-12-29 (+7d) | 2027-05-13 → 2027-05-26 (+13d) | -115d → -121d |

| ID | Task | Start | Finish | Total float |
| --- | --- | --- | --- | --- |
| 3 | **Material Shipping/Custom Clearance/Delivery** | 2027-05-20 → 2027-05-27 (+7d) | 2027-06-13 → 2027-06-20 (+7d) |  |
| PRO-TSE-LL-SH/DL-30 | Material Delivery for Electromechanical Works for Storage Tank (TSE) | 2027-05-20 → 2027-05-27 (+7d) | 2027-06-13 → 2027-06-20 (+7d) | -115d → -121d |
| 4 | **Material Site Inspection** | 2027-06-14 → 2027-06-21 (+7d) | 2027-07-07 → 2027-07-14 (+7d) |  |
| PRO-TSE-LL-MSI-30 | Material Site Inspection for Electromechanical Works for Storage Tank (TSE) | 2027-06-14 → 2027-06-21 (+7d) | 2027-07-07 → 2027-07-14 (+7d) | -115d → -121d |
| CON | **Construction Works** |  | 2027-07-12 → 2027-07-19 (+7d) |  |
| INF | **Infrastructure Networks** |  | 2027-07-12 → 2027-07-19 (+7d) |  |
| IN | **Internal** |  | 2027-07-12 → 2027-07-19 (+7d) |  |
| 1 | **Alignment-RD-01** |  | 2027-06-21 → 2027-06-28 (+7d) |  |
| EW | **Earthworks** |  | 2027-01-27 → 2027-02-03 (+7d) |  |
| EW | **Earthworks** |  | 2027-01-27 → 2027-02-03 (+7d) |  |
| CO-EW-210_R01 | Excavation and Backfilling Works Upto Design Level for Earthworks for Alignment-RD-01(Remaining)-part1 |  | 2027-01-27 → 2027-02-03 (+7d) | -62d → -68d |
| SD | **Storm Drainage Network** |  | 2027-01-07 → 2027-01-14 (+7d) |  |
| CB | **Catch Basin Sections** |  | 2027-01-07 → 2027-01-14 (+7d) |  |
| CO-SD-CB-190 | Installation and Pipes Laying Connection Works for Catch Basins of Storm Drainage Network for Alignment-RD-01 |  | 2026-12-30 → 2027-01-06 (+7d) | -81d → -87d |
| CO-SD-CB-200 | Trench Backfilling and Compaction Works for Catch Basins of Storm Drainage Network for Alignment-RD-01 |  | 2027-01-07 → 2027-01-14 (+7d) | -81d → -87d |
| CO-SD-CB-180 | Trench Excavation and Bedding Works for Catch Basins of Storm Drainage Network for Alignment-RD-01 |  | 2026-12-22 → 2026-12-29 (+7d) | -81d → -87d |
| SW | **Sewage Network** |  | 2027-02-21 → 2027-02-28 (+7d) |  |
| 1 | **Manholes** |  | 2027-02-21 → 2027-02-28 (+7d) |  |
| CO-SW-MH-210 | Excavation Works for Main Line Manholes of Sewage Network for Alignment-RD-01 |  | 2026-12-27 → 2027-01-03 (+7d) | -97d → -103d |
| CO-SW-MH-220 | Installation RC Footing Works for Main Line Manholes of Sewage Network for Alignment-RD-01 |  | 2027-01-10 → 2027-01-17 (+7d) | -97d → -103d |
| CO-SW-MH-230 | Install Grp Liner Wall Works for Main Line Manholes of Sewage Network for Alignment-RD-01 |  | 2027-01-24 → 2027-01-31 (+7d) | -97d → -103d |
| CO-SW-MH-240 | Pouring Grp Liner Wall Works for Main Line Manholes of Sewage Network for Alignment-RD-01 |  | 2027-02-07 → 2027-02-14 (+7d) | -97d → -103d |
| CO-SW-MH-250 | Backfilling Works for Main Line Manholes of Sewage Network for Alignment-RD-01 |  | 2027-02-21 → 2027-02-28 (+7d) | -97d → -103d |
| ML | **Main Line Sections** |  | 2027-02-21 → 2027-02-28 (+7d) |  |
| CO-SW-ML-140 | Trench Excavation and Bedding Works for Main Lines of Sewage Network for Alignment-RD-01 |  | 2027-01-17 → 2027-01-24 (+7d) | -81d → -87d |
| CO-SW-ML-150 | Pipes Laying Works for Main Lines of Sewage Network for Alignment-RD-01 |  | 2027-01-26 → 2027-02-02 (+7d) | -81d → -87d |
| CO-SW-ML-160 | Trench Backfilling and Compaction Works for Main Lines of Sewage Network for Alignment-RD-01 |  | 2027-02-21 → 2027-02-28 (+7d) | -97d → -103d |
| TSE | **Treated Sewage Effluent (Tse)** | 2026-11-16 → 2026-11-23 (+7d) | 2027-02-20 → 2027-02-27 (+7d) |  |
| CO-TSE-ML-200 | Trench Excavation and Bedding Works for Main Lines of Treated Sewage Effluent (Tse) for Alignment-RD-01 | 2026-11-16 → 2026-11-23 (+7d) | 2026-11-23 → 2026-11-30 (+7d) | -61d → -67d |
| CO-TSE-ML-210 | Pipes Laying Works for Main Lines of Treated Sewage Effluent (Tse) for Alignment-RD-01 | 2027-01-16 → 2027-01-23 (+7d) | 2027-02-03 → 2027-02-10 (+7d) | -106d → -112d |
| CO-TSE-ML-230 | Trench Backfilling and Compaction Works for Treated Sewage Effluent (Tse) for Alignment-RD-01 | 2027-02-04 → 2027-02-11 (+7d) | 2027-02-20 → 2027-02-27 (+7d) | -106d → -112d |
| PW | **Potable Water Network** | 2026-11-16 → 2026-11-23 (+7d) | 2027-02-08 → 2027-02-15 (+7d) |  |
| ML | **Main Line Sections** | 2026-11-16 → 2026-11-23 (+7d) | 2027-02-08 → 2027-02-15 (+7d) |  |
| CO-PW-ML-140 | Trench Excavation and Bedding Works for Main Lines of Potable Water Network for Alignment-RD-01 | 2026-11-16 → 2026-11-23 (+7d) | 2026-11-22 → 2026-11-29 (+7d) | -47d → -53d |
| CO-PW-ML-150 | Pipes Laying and accessories for Main Lines of Potable Water Network for Alignment-RD-01 | 2027-01-26 → 2027-02-02 (+7d) | 2027-02-01 → 2027-02-08 (+7d) | -96d → -102d |
| CO-PW-ML-160 | Trench Backfilling and Compaction Works for Main Lines of Potable Water Network for Alignment-RD-01 | 2027-02-02 → 2027-02-09 (+7d) | 2027-02-08 → 2027-02-15 (+7d) | -96d → -102d |
| VC | **Valve Chamber** | 2026-11-18 → 2026-11-25 (+7d) | 2027-02-08 → 2027-02-15 (+7d) |  |
| CO-PW-VC-230 | Excavation Works for Main Line Valves and Valve Chambers of Potable Water Network for Alignment-RD-01 | 2026-11-18 → 2026-11-25 (+7d) | 2026-11-22 → 2026-11-29 (+7d) | -47d → -53d |
| CO-PW-VC190 | Installation of Valve Chambers of Potable Water Network for Alignment-RD-01 | 2026-11-23 → 2026-11-30 (+7d) | 2026-11-26 → 2026-12-03 (+7d) | -41d → -47d |
| CO-PW-VC-240 | Installation Works for Valves of Potable Water Network for Alignment-RD-01 | 2026-11-28 → 2026-12-05 (+7d) | 2026-12-01 → 2026-12-08 (+7d) | -41d → -47d |
| CO-PW-VC-250 | Backfilling Works for Main Line Valves and Valve Chambers of Potable Water Network for Alignment-RD-01 | 2027-02-04 → 2027-02-11 (+7d) | 2027-02-08 → 2027-02-15 (+7d) | -96d → -102d |
| FH | **Fire Hydrant** | 2026-11-23 → 2026-11-30 (+7d) | 2027-02-08 → 2027-02-15 (+7d) |  |
| CO-PW-FH-170 | Excavation Works for Fire Hydrants of Potable Water Network for Alignment-RD-01 | 2026-11-23 → 2026-11-30 (+7d) | 2026-12-09 → 2026-12-16 (+7d) | -47d → -53d |
| CO-PW-FH-180 | Installation Works for Fire Hydrant of Potable Water Network for Alignment-RD-01 | 2027-02-02 → 2027-02-09 (+7d) | 2027-02-04 → 2027-02-11 (+7d) | -93d → -99d |
| CO-PW-FH-190 | Trench Backfilling and Compaction Works for Fire Hydrants of Potable Water Network for Alignment-RD-01 | 2027-02-06 → 2027-02-13 (+7d) | 2027-02-08 → 2027-02-15 (+7d) | -86d → -92d |
| IR | **Irrigation Network** | 2027-02-21 → 2027-02-28 (+7d) | 2027-04-06 → 2027-04-13 (+7d) |  |
| ML | **Main Line Pipes** | 2027-02-21 → 2027-02-28 (+7d) | 2027-04-06 → 2027-04-13 (+7d) |  |
| CO-IR-ML-150 | Trench Excavation and Bedding Works for Main Lines of Irrigation Network for Alignment-RD-01 | 2027-02-21 → 2027-02-28 (+7d) | 2027-02-28 → 2027-03-07 (+7d) | -106d → -112d |
| CO-IR-ML-160 | Pipes Laying Works for Main Lines of Irrigation Network for Alignment-RD-01 | 2027-03-01 → 2027-03-08 (+7d) | 2027-03-13 → 2027-03-20 (+7d) | -106d → -112d |
| CO-IR-ML-170 | Installation Works for Main Line Valves of Irrigation Network for Alignment-RD-01 | 2027-03-14 → 2027-03-21 (+7d) | 2027-03-21 → 2027-03-28 (+7d) | -106d → -112d |
| CO-IR-ML-190 | Installation Works for Bulbblers And Sprinklers and Irrigation Control System of Irrigation Network for Alignment-RD-01 | 2027-03-22 → 2027-03-29 (+7d) | 2027-04-01 → 2027-04-08 (+7d) | -106d → -112d |
| CO-IR-ML-180 | Trench Backfilling and Compaction Works for Main Lines of Irrigation Network for Alignment-RD-01 | 2027-04-03 → 2027-04-10 (+7d) | 2027-04-06 → 2027-04-13 (+7d) | -106d → -112d |
| MV | **Medium Voltage Network** | 2027-02-22 → 2027-03-01 (+7d) | 2027-03-17 → 2027-03-24 (+7d) |  |
| CW | **Cabling Works** | 2027-02-22 → 2027-03-01 (+7d) | 2027-03-17 → 2027-03-24 (+7d) |  |
| CO-MV-ML-280 | Trench Excavation and Bedding Works for Medium Voltage Network for Alignment-RD-01 | 2027-02-22 → 2027-03-01 (+7d) | 2027-02-28 → 2027-03-07 (+7d) | -97d → -103d |
| CO-MV-ML-290 | Duct Laying Works for Medium Voltage Network for Alignment-RD-01 | 2027-03-01 → 2027-03-08 (+7d) | 2027-03-07 → 2027-03-17 (+10d) | -97d → -103d |
| CO-MV-ML-300 | Trench Backfilling and Compaction Works for Medium Voltage Network for Alignment-RD-01 | 2027-03-08 → 2027-03-18 (+10d) | 2027-03-17 → 2027-03-24 (+7d) | -97d → -103d |
| LV | **Low Voltage Network** | 2027-03-30 → 2027-04-06 (+7d) | 2027-04-27 → 2027-05-04 (+7d) |  |
| MLVC | **Main Low Voltage Cables Works ( Cable 300 MM )** | 2027-03-30 → 2027-04-06 (+7d) | 2027-04-19 → 2027-04-26 (+7d) |  |
| CON-LV-ML-130 | Trench Excavation and Bedding Works for Main Cable of Low Voltage Network for Alignment-RD-01 | 2027-03-30 → 2027-04-06 (+7d) | 2027-04-05 → 2027-04-12 (+7d) | -107d → -113d |
| CON-LV-ML-140 | Cable Laying Works for Main Cable of Low Voltage Network for Alignment-RD-01 | 2027-04-06 → 2027-04-13 (+7d) | 2027-04-12 → 2027-04-19 (+7d) | -107d → -113d |
| CON-LV-ML-150 | Trench Backfilling and Compaction Works for Main Cable of Low Voltage Network for Alignment-RD-01 | 2027-04-13 → 2027-04-20 (+7d) | 2027-04-19 → 2027-04-26 (+7d) | -104d → -110d |
| SLVC | **Service Low Voltage Cables Works ( Cable 70 MM )** | 2027-04-06 → 2027-04-13 (+7d) | 2027-04-27 → 2027-05-04 (+7d) |  |
| CON-LV-HC-130 | Trench Excavation and Bedding Works for Service Cable of Low Voltage Network for Alignment-RD-01 | 2027-04-06 → 2027-04-13 (+7d) | 2027-04-12 → 2027-04-19 (+7d) | -105d → -111d |
| CON-LV-HC-140 | Cable Laying Works for Service Cable of Low Voltage Network for Alignment-RD-01 | 2027-04-13 → 2027-04-20 (+7d) | 2027-04-20 → 2027-04-27 (+7d) | -105d → -111d |
| CON-LV-HC-150 | Trench Backfilling and Compaction Works for Service Cable of Low Voltage Network for Alignment-RD-01 | 2027-04-21 → 2027-04-28 (+7d) | 2027-04-27 → 2027-05-04 (+7d) | -105d → -111d |
| DP | **Distribution Pillars Works** | 2027-04-06 → 2027-04-13 (+7d) | 2027-04-13 → 2027-04-20 (+7d) |  |
| CON-LV-DP-130 | Foundation Excavation Works for Distribution Pillars of Low Voltage Network for Alignment-RD-01 | 2027-04-06 → 2027-04-13 (+7d) | 2027-04-13 → 2027-04-20 (+7d) | -95d → -101d |
| SL | **Street Lighting Network** | 2027-03-01 → 2027-03-08 (+7d) | 2027-04-18 → 2027-04-25 (+7d) |  |
| LP | **Lighting Poles Works** | 2027-03-01 → 2027-03-08 (+7d) | 2027-03-31 → 2027-04-07 (+7d) |  |

| ID | Task | Start | Finish | Total float |
| --- | --- | --- | --- | --- |
| CO-SL-LP-350 | Installation Works for Lighting Poles Foundation of Street Lighting Network for Alignment-RD-01 | 2027-03-01 → 2027-03-08 (+7d) | 2027-03-13 → 2027-03-20 (+7d) | -90d → -96d |
| CO-SL-LP-360 | Installation Works for Lighting Poles of Street Lighting Network for Alignment-RD-01 | 2027-03-20 → 2027-03-27 (+7d) | 2027-03-24 → 2027-03-31 (+7d) | -95d → -101d |
| CO-SL-LP-380 | Backfilling Works for Lighting Poles of Street Lighting Network for Alignment-RD-01 | 2027-03-25 → 2027-04-01 (+7d) | 2027-03-31 → 2027-04-07 (+7d) | -91d → -97d |
| CW | **Cabling Works** | 2027-04-07 → 2027-04-14 (+7d) | 2027-04-18 → 2027-04-25 (+7d) |  |
| CO-SL-CL-290 | Cable Laying Works for Street Lighting Network for Alignment-RD-01 | 2027-04-07 → 2027-04-14 (+7d) | 2027-04-12 → 2027-04-19 (+7d) | -106d → -112d |
| CO-SL-CL-300 | Trench Backfilling and Compaction Works for Street Lighting Network for Alignment-RD-01 | 2027-04-13 → 2027-04-20 (+7d) | 2027-04-18 → 2027-04-25 (+7d) | -106d → -112d |
| TE | **Telecom and Light Current Network** | 2027-04-19 → 2027-04-26 (+7d) | 2027-05-06 → 2027-05-13 (+7d) |  |
| PD | **Ducts Works** | 2027-04-28 → 2027-05-05 (+7d) | 2027-05-05 → 2027-05-12 (+7d) |  |
| CO-TE-DW-150 | Pipes Laying Works for Ducts of Telecom Network for Alignment-RD-01 | 2027-04-28 → 2027-05-05 (+7d) | 2027-05-02 → 2027-05-09 (+7d) | -105d → -111d |
| CO-TE-DW-160 | Trench Backfilling and Compaction Works for Ducts of Telecom Network for Alignment-RD-01 | 2027-05-03 → 2027-05-10 (+7d) | 2027-05-05 → 2027-05-12 (+7d) | -105d → -111d |
| MH | **Manholes Works** | 2027-04-19 → 2027-04-26 (+7d) | 2027-04-27 → 2027-05-04 (+7d) |  |
| CO-TE-MH-170 | Excavation Works for Manholes of Telecom Network for Alignment-RD-01 | 2027-04-19 → 2027-04-26 (+7d) | 2027-04-22 → 2027-04-29 (+7d) | -98d → -104d |
| CO-TE-MH-180 | Installation Works for Manholes of Telecom Network for Alignment-RD-01 | 2027-04-19 → 2027-04-26 (+7d) | 2027-04-22 → 2027-04-29 (+7d) | -98d → -104d |
| CO-TE-MH-190 | Backfilling Works for Manholes of Telecom Network for Alignment-RD-01 | 2027-04-24 → 2027-05-01 (+7d) | 2027-04-27 → 2027-05-04 (+7d) | -98d → -104d |
| DD | **CCTV, Telephone, MSN, ACs System Works** | 2027-04-28 → 2027-05-05 (+7d) | 2027-05-06 → 2027-05-13 (+7d) |  |
| CO-TE-CTV-150 | Installation of CCTV, Telephone, ACS and MSN Systems Cables for Alignment-RD-01 | 2027-04-28 → 2027-05-05 (+7d) | 2027-05-06 → 2027-05-13 (+7d) | -87d → -93d |
| RD | **Road Network** | 2027-05-06 → 2027-05-13 (+7d) | 2027-06-01 → 2027-06-08 (+7d) |  |
| LS | **Pavement Works** | 2027-05-06 → 2027-05-13 (+7d) | 2027-05-23 → 2027-05-30 (+7d) |  |
| CO-RD-PV-180 | Fixing of Curbstone for Sidewalks Pavement for Alignment-RD-01 | 2027-05-06 → 2027-05-13 (+7d) | 2027-05-23 → 2027-05-30 (+7d) | -101d → -107d |
| CO-RD-PV-190 | Fixing of Interlock Tiles for Sidewalks Pavement for Alignment-RD-01 | 2027-05-06 → 2027-05-13 (+7d) | 2027-05-23 → 2027-05-30 (+7d) | -93d → -99d |
| TS | **Traffic Signs Boards and Roads Marking** | 2027-05-10 → 2027-05-23 (+13d) | 2027-06-01 → 2027-06-08 (+7d) |  |
| CO-RD-F-RM-190 | Application of Road Marking Works For Road Works for Alignment-RD-01 | 2027-05-10 → 2027-05-23 (+13d) | 2027-05-13 → 2027-05-26 (+13d) | -84d → -90d |
| CO-RD-F-TS-130 | Installation Works of Traffic Signs Boards For Road Works for Alignment-RD-01 | 2027-05-29 → 2027-06-05 (+7d) | 2027-06-01 → 2027-06-08 (+7d) | -91d → -97d |
| 3 | **Finishes for Infrastructure Networks** | 2027-03-18 → 2027-03-25 (+7d) | 2027-06-21 → 2027-06-28 (+7d) |  |
| 11 | **Storm Drainage Network** | 2027-05-06 → 2027-05-13 (+7d) | 2027-06-21 → 2027-06-28 (+7d) |  |
| TF | **Testing and Finishes** | 2027-05-06 → 2027-05-13 (+7d) | 2027-06-21 → 2027-06-28 (+7d) |  |
| CO-SD-CB-TF-190 | Catch Basin Internal Finishes (Benching ) for Storm Drainage Network for Alignment-RD-01 | 2027-05-06 → 2027-05-13 (+7d) | 2027-05-12 → 2027-05-25 (+13d) | -105d → -111d |
| CO-SD-ML-TF-110 | Testing Work for Pipes of Storm Drainage Network for Alignment-RD-01 | 2027-06-02 → 2027-06-09 (+7d) | 2027-06-03 → 2027-06-10 (+7d) | -117d → -123d |
| CO-SD-MH-TF-230 | Testing Works for Manholes of Storm Drainage Network for Alignment-RD-01 | 2027-06-05 → 2027-06-12 (+7d) | 2027-06-06 → 2027-06-13 (+7d) | -117d → -123d |
| CO-SD-CB-TF-170 | Testing Works for Catch Basins of Storm Drainage Network for Alignment-RD-01 | 2027-06-07 → 2027-06-14 (+7d) | 2027-06-14 → 2027-06-21 (+7d) | -117d → -123d |
| CO-SD-CB-TF-180 | Install Catch Basin Cover Works for External Finishes of Storm Drainage Network for Alignment-RD-01 | 2027-06-15 → 2027-06-22 (+7d) | 2027-06-21 → 2027-06-28 (+7d) | -104d → -110d |
| 10 | **Sewage Network** | 2027-05-06 → 2027-05-13 (+7d) | 2027-05-13 → 2027-05-26 (+13d) |  |
| TF | **Testing and Finishes** | 2027-05-06 → 2027-05-13 (+7d) | 2027-05-13 → 2027-05-26 (+13d) |  |
| CO-SW-TF-250 | Testing Works for Main Line Manholes of Sewage Network for Alignment-RD-01 | 2027-05-06 → 2027-05-13 (+7d) | 2027-05-09 → 2027-05-22 (+13d) | -86d → -92d |
| CO-SW-TF-230 | Final Testing For Main Line of Sewage Network for Alignment-RD-01 | 2027-05-10 → 2027-05-23 (+13d) | 2027-05-13 → 2027-05-26 (+13d) | -86d → -92d |
| 9 | **Potable Water Network** | 2027-05-06 → 2027-05-13 (+7d) | 2027-05-20 → 2027-05-27 (+7d) |  |
| TF | **Testing and Finishes** | 2027-05-06 → 2027-05-13 (+7d) | 2027-05-20 → 2027-05-27 (+7d) |  |
| CO-PW-TF-140 | Fire Hydrant Finishies (S.Box + Safety + Marker Post ) of Potable Water Network for Alignment-RD-01 | 2027-05-06 → 2027-05-13 (+7d) | 2027-05-10 → 2027-05-23 (+13d) | -89d → -95d |
| CO-PW-TF-150 | Final Finishes works and Covers for Valves and Valve Chambers for Alignment-RD-01 | 2027-05-11 → 2027-05-24 (+13d) | 2027-05-12 → 2027-05-25 (+13d) | -89d → -95d |
| CO-PW-TF-220 | Testing of Potable Water Network for Alignment-RD-01 | 2027-05-13 → 2027-05-26 (+13d) | 2027-05-20 → 2027-05-27 (+7d) | -89d → -95d |
| 13 | **Irrigation Network** | 2027-05-22 → 2027-05-29 (+7d) | 2027-05-23 → 2027-05-30 (+7d) |  |
| TF | **Testing and Finishes** | 2027-05-22 → 2027-05-29 (+7d) | 2027-05-23 → 2027-05-30 (+7d) |  |
| CO-IR-TF-170 | Final Testing (pressure tests) of Irrigation Network for Alignment-RD-01 | 2027-05-22 → 2027-05-29 (+7d) | 2027-05-23 → 2027-05-30 (+7d) | -89d → -95d |
| 1 | **Treated Sewage Effluent (Tse)** | 2027-05-22 → 2027-05-29 (+7d) | 2027-05-23 → 2027-05-30 (+7d) |  |
| TF | **Testing and Finishes** | 2027-05-22 → 2027-05-29 (+7d) | 2027-05-23 → 2027-05-30 (+7d) |  |
| CO-TSE-TF-210 | Final Testing (pressure tests) of Treated Sewage Effluent (Tse) for Alignment-RD-01 | 2027-05-22 → 2027-05-29 (+7d) | 2027-05-23 → 2027-05-30 (+7d) | -79d → -85d |
| 14 | **Medium Voltage Network** | 2027-03-18 → 2027-03-25 (+7d) | 2027-03-20 → 2027-03-27 (+7d) |  |
| TT | **Termination and Testing Works** | 2027-03-18 → 2027-03-25 (+7d) | 2027-03-20 → 2027-03-27 (+7d) |  |
| CO-MV-TF-230 | Testing and Termination Works of Medium Voltage Network for Alignment-RD-01 | 2027-03-18 → 2027-03-25 (+7d) | 2027-03-20 → 2027-03-27 (+7d) | -56d → -62d |
| 6 | **Low Voltage Network** | 2027-04-28 → 2027-05-05 (+7d) | 2027-05-02 → 2027-05-09 (+7d) |  |
| TT | **Termination and Testing Works** | 2027-04-28 → 2027-05-05 (+7d) | 2027-05-02 → 2027-05-09 (+7d) |  |
| CON-LV-TT-120 | Testing and Termination Works for Substation Low Voltage Panel Boards of Low Voltage Network for Alignment-RD-01 | 2027-04-28 → 2027-05-05 (+7d) | 2027-05-02 → 2027-05-09 (+7d) | -73d → -79d |
| 12 | **Street Lighting Network** | 2027-04-19 → 2027-04-26 (+7d) | 2027-05-25 → 2027-06-01 (+7d) |  |
| TR | **Termination and Testing Works** | 2027-04-19 → 2027-04-26 (+7d) | 2027-05-25 → 2027-06-01 (+7d) |  |
| CO-SL-LP-370 | Installation Works for Lighting Fixtures With Drop Wire of Street Lighting Network for Alignment-RD-01 | 2027-04-19 → 2027-04-26 (+7d) | 2027-04-25 → 2027-05-02 (+7d) | -106d → -112d |
| CO-SL-TF-410 | Testing Works for Lighting Poles of Street Lighting Network for Alignment-RD-01 | 2027-05-23 → 2027-05-30 (+7d) | 2027-05-25 → 2027-06-01 (+7d) | -87d → -93d |
| ES | **Earthing System Works** | 2027-05-11 → 2027-05-24 (+13d) | 2027-05-22 → 2027-05-29 (+7d) |  |
| CO-SL-ES-240 | Install Earthing System Works for Lighting Poles of Street Lighting Network for Alignment-RD-01 | 2027-05-11 → 2027-05-24 (+13d) | 2027-05-13 → 2027-05-26 (+13d) | -93d → -99d |
| CO-SL-ES-250 | Install Earthing System Works for Lighting Panel Boards of Street Lighting Network for Alignment-RD-01 | 2027-05-20 → 2027-05-27 (+7d) | 2027-05-22 → 2027-05-29 (+7d) | -92d → -98d |
| 3 | **Telecom and Light Current Network** | 2027-05-06 → 2027-05-13 (+7d) | 2027-05-12 → 2027-05-25 (+13d) |  |
| 1 | **Testing and Finishes** | 2027-05-06 → 2027-05-13 (+7d) | 2027-05-12 → 2027-05-25 (+13d) |  |
| CO-TE-CTV-TF-180 | Testing and Interface modules with Telecom for Alignment-RD-01 | 2027-05-06 → 2027-05-13 (+7d) | 2027-05-09 → 2027-05-22 (+13d) | -89d → -95d |
| CO-TE-CTV-TF-310 | Testing and Interface modules with CCTV, Telephone, MSN and Access Control for Alignment-RD-01 | 2027-05-10 → 2027-05-23 (+13d) | 2027-05-12 → 2027-05-25 (+13d) | -89d → -95d |
| 5 | **Alignment-RD-02** | 2026-12-13 → 2026-12-20 (+7d) | 2027-07-12 → 2027-07-19 (+7d) |  |
| EW | **Earthworks** | 2026-12-13 → 2026-12-20 (+7d) | 2026-12-26 → 2027-01-02 (+7d) |  |
| EW | **Earthworks** | 2026-12-13 → 2026-12-20 (+7d) | 2026-12-26 → 2027-01-02 (+7d) |  |
| CO-EW-220 | Excavation and Backfilling Works Upto Design Level for Earthworks for Alignment-RD-02 | 2026-12-13 → 2026-12-20 (+7d) | 2026-12-26 → 2027-01-02 (+7d) | -121d → -127d |
| SD | **Storm Drainage Network** | 2026-12-27 → 2027-01-03 (+7d) | 2027-04-17 → 2027-04-24 (+7d) |  |
| MH | **Manholes** | 2026-12-27 → 2027-01-03 (+7d) | 2027-01-10 → 2027-01-17 (+7d) |  |
| CO-SD-MH-270 | Trench Excavation and Bedding Works for Manholes of Storm Drainage Network for Alignment-RD-02 | 2026-12-27 → 2027-01-03 (+7d) | 2026-12-30 → 2027-01-06 (+7d) | -121d → -127d |

| ID | Task | Start | Finish | Total float |
| --- | --- | --- | --- | --- |
| CO-SD-MH-280 | Install RC Footing Works for Manholes of Storm Drainage Network for Alignment-RD-02 | 2026-12-31 → 2027-01-07 (+7d) | 2027-01-03 → 2027-01-10 (+7d) | -121d → -127d |
| CO-SD-MH-290 | Install RC Wall Rings & Slab Works for Manholes of Storm Drainage Network for Alignment-RD-02 | 2027-01-04 → 2027-01-11 (+7d) | 2027-01-06 → 2027-01-13 (+7d) | -121d → -127d |
| CO-SD-MH-300 | Backfilling Works for Manholes of Storm Drainage Network for Alignment-RD-02 | 2027-01-07 → 2027-01-14 (+7d) | 2027-01-10 → 2027-01-17 (+7d) | -115d → -121d |
| ML | **Main Line Sections** | 2027-01-07 → 2027-01-14 (+7d) | 2027-01-17 → 2027-01-24 (+7d) |  |
| CO-SD-ML-170 | Trench Excavation and Bedding Works for Main Lines of Storm Drainage Network for Alignment-RD-02 | 2027-01-07 → 2027-01-14 (+7d) | 2027-01-10 → 2027-01-17 (+7d) | -121d → -127d |
| CO-SD-ML-180 | Pipes Laying Works for Main Lines of Storm Drainage Network for Alignment-RD-02 | 2027-01-11 → 2027-01-18 (+7d) | 2027-01-13 → 2027-01-20 (+7d) | -121d → -127d |
| CO-SD-ML-190 | Trench Backfilling and Compaction Works for Main Lines of Storm Drainage Network for Alignment-RD-02 | 2027-01-14 → 2027-01-21 (+7d) | 2027-01-17 → 2027-01-24 (+7d) | -121d → -127d |
| CB | **Catch Basin Sections** | 2027-01-18 → 2027-01-25 (+7d) | 2027-04-17 → 2027-04-24 (+7d) |  |
| CO-SD-CB-210 | Trench Excavation and Bedding Works for Catch Basins of Storm Drainage Network for Alignment-RD-02 | 2027-01-18 → 2027-01-25 (+7d) | 2027-02-07 → 2027-02-14 (+7d) | -90d → -96d |
| CO-SD-CB-220 | Installation and Pipes Laying Connection Works for Catch Basins of Storm Drainage Network for Alignment-RD-02 | 2027-02-08 → 2027-02-15 (+7d) | 2027-03-01 → 2027-03-08 (+7d) | -90d → -96d |
| CO-SD-CB-230 | Trench Backfilling and Compaction Works for Catch Basins of Storm Drainage Network for Alignment-RD-02 | 2027-04-12 → 2027-04-19 (+7d) | 2027-04-17 → 2027-04-24 (+7d) | -122d → -128d |
| SW | **Sewage Network** | 2027-01-18 → 2027-01-25 (+7d) | 2027-03-29 → 2027-04-05 (+7d) |  |
| 1 | **Manholes** | 2027-01-18 → 2027-01-25 (+7d) | 2027-03-29 → 2027-04-05 (+7d) |  |
| CO-SW-MH-260 | Excavation Works for Main Line Manholes of Sewage Network for Alignment-RD-02 | 2027-01-18 → 2027-01-25 (+7d) | 2027-01-30 → 2027-02-06 (+7d) | -121d → -127d |
| CO-SW-MH-270 | Installation RC Footing Works for Main Line Manholes of Sewage Network for Alignment-RD-02 | 2027-01-31 → 2027-02-07 (+7d) | 2027-02-11 → 2027-02-18 (+7d) | -121d → -127d |
| CO-SW-MH-280 | Install Grp Liner Wall Works for Main Line Manholes of Sewage Network for Alignment-RD-02 | 2027-02-13 → 2027-02-20 (+7d) | 2027-02-25 → 2027-03-04 (+7d) | -121d → -127d |
| CO-SW-MH-290 | Pouring Grp Liner Wall Works for Main Line Manholes of Sewage Network for Alignment-RD-02 | 2027-02-27 → 2027-03-06 (+7d) | 2027-03-15 → 2027-03-22 (+7d) | -121d → -127d |
| CO-SW-MH-300 | Backfilling Works for Main Line Manholes of Sewage Network for Alignment-RD-02 | 2027-03-16 → 2027-03-23 (+7d) | 2027-03-29 → 2027-04-05 (+7d) | -121d → -127d |
| ML | **Main Line Sections** | 2027-01-18 → 2027-01-25 (+7d) | 2027-03-29 → 2027-04-05 (+7d) |  |
| CO-SW-ML-170 | Trench Excavation and Bedding Works for Main Lines of Sewage Network for Alignment-RD-02 | 2027-01-18 → 2027-01-25 (+7d) | 2027-01-30 → 2027-02-06 (+7d) | -82d → -88d |
| CO-SW-ML-180 | Pipes Laying Works for Main Lines of Sewage Network for Alignment-RD-02 | 2027-01-31 → 2027-02-07 (+7d) | 2027-02-11 → 2027-02-18 (+7d) | -82d → -88d |
| CO-SW-ML-190 | Trench Backfilling and Compaction Works for Main Lines of Sewage Network for Alignment-RD-02 | 2027-03-17 → 2027-03-24 (+7d) | 2027-03-29 → 2027-04-05 (+7d) | -107d → -113d |
| TSE | **Treated Sewage Effluent (Tse)** | 2027-01-18 → 2027-01-25 (+7d) | 2027-03-06 → 2027-03-16 (+10d) |  |
| CO-TSE-ML-250 | Trench Excavation and Bedding Works for Main Lines of Treated Sewage Effluent (Tse) for Alignment-RD-02 | 2027-01-18 → 2027-01-25 (+7d) | 2027-01-31 → 2027-02-07 (+7d) | -107d → -113d |
| CO-TSE-ML-260 | Pipes Laying Works for Main Lines of Treated Sewage Effluent (Tse) for Alignment-RD-02 | 2027-02-01 → 2027-02-08 (+7d) | 2027-02-20 → 2027-02-27 (+7d) | -107d → -113d |
| CO-TSE-ML-280 | Trench Backfilling and Compaction Works for Treated Sewage Effluent (Tse) for Alignment-RD-02 | 2027-02-21 → 2027-02-28 (+7d) | 2027-03-06 → 2027-03-16 (+10d) | -107d → -113d |
| PW | **Potable Water Network** | 2027-03-07 → 2027-03-17 (+10d) | 2027-03-30 → 2027-04-06 (+7d) |  |
| ML | **Main Line Sections** | 2027-03-07 → 2027-03-17 (+10d) | 2027-03-29 → 2027-04-05 (+7d) |  |
| CO-PW-ML-170 | Trench Excavation and Bedding Works for Main Lines of Potable Water Network for Alignment-RD-02 | 2027-03-07 → 2027-03-17 (+10d) | 2027-03-15 → 2027-03-22 (+7d) | -107d → -113d |
| CO-PW-ML-180 | Pipes Laying and accessories for Main Lines of Potable Water Network for Alignment-RD-02 | 2027-03-16 → 2027-03-23 (+7d) | 2027-03-23 → 2027-03-30 (+7d) | -107d → -113d |
| CO-PW-ML-190 | Trench Backfilling and Compaction Works for Main Lines of Potable Water Network for Alignment-RD-02 | 2027-03-24 → 2027-03-31 (+7d) | 2027-03-29 → 2027-04-05 (+7d) | -106d → -112d |
| VC | **Valve Chamber** | 2027-03-07 → 2027-03-17 (+10d) | 2027-03-30 → 2027-04-06 (+7d) |  |
| CO-PW-VC-260 | Excavation Works for Main Line Valves and Valve Chambers of Potable Water Network for Alignment-RD-02 | 2027-03-07 → 2027-03-17 (+10d) | 2027-03-15 → 2027-03-22 (+7d) | -107d → -113d |
| CO-PW-VC200 | Installation of Valve Chambers of Potable Water Network for Alignment-RD-02 | 2027-03-16 → 2027-03-23 (+7d) | 2027-03-18 → 2027-03-25 (+7d) | -107d → -113d |
| CO-PW-VC-270 | Installation Works for Valves of Potable Water Network for Alignment-RD-02 | 2027-03-20 → 2027-03-27 (+7d) | 2027-03-24 → 2027-03-31 (+7d) | -107d → -113d |
| CO-PW-VC-280 | Backfilling Works for Main Line Valves and Valve Chambers of Potable Water Network for Alignment-RD-02 | 2027-03-25 → 2027-04-01 (+7d) | 2027-03-30 → 2027-04-06 (+7d) | -107d → -113d |
| FH | **Fire Hydrant** | 2027-03-16 → 2027-03-23 (+7d) | 2027-03-30 → 2027-04-06 (+7d) |  |
| CO-PW-FH-200 | Excavation Works for Fire Hydrants of Potable Water Network for Alignment-RD-02 | 2027-03-16 → 2027-03-23 (+7d) | 2027-03-18 → 2027-03-25 (+7d) | -103d → -109d |
| CO-PW-FH-210 | Installation Works for Fire Hydrant of Potable Water Network for Alignment-RD-02 | 2027-03-24 → 2027-03-31 (+7d) | 2027-03-27 → 2027-04-03 (+7d) | -107d → -113d |
| CO-PW-FH-220 | Trench Backfilling and Compaction Works for Fire Hydrants of Potable Water Network for Alignment-RD-02 | 2027-03-28 → 2027-04-04 (+7d) | 2027-03-30 → 2027-04-06 (+7d) | -107d → -113d |
| IR | **Irrigation Network** | 2027-03-17 → 2027-03-24 (+7d) | 2027-04-06 → 2027-04-13 (+7d) |  |
| ML | **Main Line Pipes** | 2027-03-17 → 2027-03-24 (+7d) | 2027-04-06 → 2027-04-13 (+7d) |  |
| CO-IR-ML-200 | Trench Excavation and Bedding Works for Main Lines of Irrigation Network for Alignment-RD-02 | 2027-03-17 → 2027-03-24 (+7d) | 2027-03-20 → 2027-03-27 (+7d) | -93d → -99d |
| CO-IR-ML-210 | Pipes Laying Works for Main Lines of Irrigation Network for Alignment-RD-02 | 2027-03-24 → 2027-03-31 (+7d) | 2027-03-27 → 2027-04-03 (+7d) | -96d → -102d |
| CO-IR-ML-220 | Installation Works for Main Line Valves of Irrigation Network for Alignment-RD-02 | 2027-03-28 → 2027-04-04 (+7d) | 2027-03-30 → 2027-04-06 (+7d) | -96d → -102d |
| CO-IR-ML-240 | Installation Works for Bulbblers And Sprinkler and Irrigation Control System of Irrigation Network for Alignment-RD-02 | 2027-03-31 → 2027-04-07 (+7d) | 2027-04-03 → 2027-04-10 (+7d) | -96d → -102d |
| CO-IR-ML-230 | Trench Backfilling and Compaction Works for Main Lines of Irrigation Network for Alignment-RD-02 | 2027-04-04 → 2027-04-11 (+7d) | 2027-04-06 → 2027-04-13 (+7d) | -96d → -102d |
| MV | **Medium Voltage Network** | 2027-04-18 → 2027-04-25 (+7d) | 2027-05-01 → 2027-05-08 (+7d) |  |
| CW | **Cabling Works** | 2027-04-18 → 2027-04-25 (+7d) | 2027-05-01 → 2027-05-08 (+7d) |  |
| CO-MV-ML-310 | Trench Excavation and Bedding Works for Medium Voltage Network for Alignment-RD-02 | 2027-04-18 → 2027-04-25 (+7d) | 2027-04-21 → 2027-04-28 (+7d) | -122d → -128d |
| CO-MV-ML-320 | Duct Laying Works for Medium Voltage Network for Alignment-RD-02 | 2027-04-22 → 2027-04-29 (+7d) | 2027-04-26 → 2027-05-03 (+7d) | -122d → -128d |
| CO-MV-ML-330 | Trench Backfilling and Compaction Works for Medium Voltage Network for Alignment-RD-02 | 2027-04-27 → 2027-05-04 (+7d) | 2027-05-01 → 2027-05-08 (+7d) | -122d → -128d |
| LV | **Low Voltage Network** | 2027-04-07 → 2027-04-14 (+7d) | 2027-05-29 → 2027-06-05 (+7d) |  |
| MLVC | **Main Low Voltage Cables Works ( Cable 300 MM )** | 2027-04-07 → 2027-04-14 (+7d) | 2027-05-23 → 2027-05-30 (+7d) |  |
| CON-LV-ML-170 | Cable Laying Works for Main Cable of Low Voltage Network for Alignment-RD-02 | 2027-04-07 → 2027-04-14 (+7d) | 2027-04-20 → 2027-04-27 (+7d) | -96d → -102d |
| CON-LV-ML-160 | Trench Excavation and Bedding Works for Main Cable of Low Voltage Network for Alignment-RD-02 | 2027-05-02 → 2027-05-09 (+7d) | 2027-05-06 → 2027-05-13 (+7d) | -122d → -128d |
| CON-LV-ML-180 | Trench Backfilling and Compaction Works for Main Cable of Low Voltage Network for Alignment-RD-02 | 2027-05-08 → 2027-05-20 (+12d) | 2027-05-23 → 2027-05-30 (+7d) | -113d → -119d |
| SLVC | **Service Low Voltage Cables Works ( Cable 70 MM )** | 2027-05-08 → 2027-05-20 (+12d) | 2027-05-29 → 2027-06-05 (+7d) |  |
| CON-LV-HC-160 | Trench Excavation and Bedding Works for Service Cable of Low Voltage Network for Alignment-RD-02 | 2027-05-08 → 2027-05-20 (+12d) | 2027-05-11 → 2027-05-24 (+13d) | -114d → -120d |
| CON-LV-HC-170 | Cable Laying Works for Service Cable of Low Voltage Network for Alignment-RD-02 | 2027-05-12 → 2027-05-25 (+13d) | 2027-05-24 → 2027-05-31 (+7d) | -114d → -120d |
| CON-LV-HC-180 | Trench Backfilling and Compaction Works for Service Cable of Low Voltage Network for Alignment-RD-02 | 2027-05-25 → 2027-06-01 (+7d) | 2027-05-29 → 2027-06-05 (+7d) | -114d → -120d |
| DP | **Distribution Pillars Works** | 2027-05-02 → 2027-05-09 (+7d) | 2027-05-23 → 2027-05-30 (+7d) |  |
| CON-LV-DP-160 | Foundation Excavation Works for Distribution Pillars of Low Voltage Network for Alignment-RD-02 | 2027-05-02 → 2027-05-09 (+7d) | 2027-05-08 → 2027-05-20 (+12d) | -122d → -128d |
| CON-LV-DP-170 | Pouring Plain Concrete For Distribution Pillar Units of Low Voltage Network for Alignment-RD-02 | 2027-05-09 → 2027-05-22 (+13d) | 2027-05-12 → 2027-05-25 (+13d) | -102d → -108d |
| CON-LV-DP-180 | Installation Works for Distribution Pillar Units of Low Voltage Network for Alignment-RD-02 | 2027-05-13 → 2027-05-26 (+13d) | 2027-05-23 → 2027-05-30 (+7d) | -102d → -108d |
| SL | **Street Lighting Network** | 2027-05-09 → 2027-05-22 (+13d) | 2027-06-07 → 2027-06-14 (+7d) |  |
| LP | **Lighting Poles Works** | 2027-05-09 → 2027-05-22 (+13d) | 2027-05-26 → 2027-06-02 (+7d) |  |
| CO-SL-LP-400 | Installation Works for Lighting Poles Foundation of Street Lighting Network for Alignment-RD-02 | 2027-05-09 → 2027-05-22 (+13d) | 2027-05-12 → 2027-05-25 (+13d) | -122d → -128d |
| CO-SL-LP-410 | Installation Works for Lighting Poles of Street Lighting Network for Alignment-RD-02 | 2027-05-13 → 2027-05-26 (+13d) | 2027-05-23 → 2027-05-30 (+7d) | -122d → -128d |
| CO-SL-LP-430 | Backfilling Works for Lighting Poles of Street Lighting Network for Alignment-RD-02 | 2027-05-24 → 2027-05-31 (+7d) | 2027-05-26 → 2027-06-02 (+7d) | -122d → -128d |

| ID | Task | Start | Finish | Total float |
| --- | --- | --- | --- | --- |
| CW | **Cabling Works** | 2027-05-09 → 2027-05-22 (+13d) | 2027-05-22 → 2027-05-29 (+7d) |  |
| CO-SL-CL-320 | Cable Laying Works for Street Lighting Network for Alignment-RD-02 | 2027-05-09 → 2027-05-22 (+13d) | 2027-05-12 → 2027-05-25 (+13d) | -118d → -124d |
| CO-SL-CL-330 | Trench Backfilling and Compaction Works for Street Lighting Network for Alignment-RD-02 | 2027-05-13 → 2027-05-26 (+13d) | 2027-05-22 → 2027-05-29 (+7d) | -118d → -124d |
| DPB | **Distrubution Panel Boards** | 2027-05-27 → 2027-06-03 (+7d) | 2027-06-07 → 2027-06-14 (+7d) |  |
| CO-SL-DB-330 | Installation Works for Panel Board Concrete Foundations of Street Lighting Network for Alignment-RD-02 | 2027-05-27 → 2027-06-03 (+7d) | 2027-05-30 → 2027-06-06 (+7d) | -122d → -128d |
| CO-SL-DB-340 | Installation Works for Lighting Panel Boards of Street Lighting Network for Alignment-RD-02 | 2027-05-31 → 2027-06-07 (+7d) | 2027-06-07 → 2027-06-14 (+7d) | -122d → -128d |
| TE | **Telecom and Light Current Network** | 2027-05-02 → 2027-05-09 (+7d) | 2027-06-19 → 2027-06-26 (+7d) |  |
| PD | **Ducts Works** | 2027-06-08 → 2027-06-15 (+7d) | 2027-06-19 → 2027-06-26 (+7d) |  |
| CO-TE-DW-190 | Pipes Laying Works for Ducts of Telecom Network for Alignment-RD-02 | 2027-06-08 → 2027-06-15 (+7d) | 2027-06-13 → 2027-06-20 (+7d) | -122d → -128d |
| CO-TE-DW-200 | Trench Backfilling and Compaction Works for Ducts of Telecom Network for Alignment-RD-02 | 2027-06-14 → 2027-06-21 (+7d) | 2027-06-19 → 2027-06-26 (+7d) | -122d → -128d |
| MH | **Manholes Works** | 2027-05-02 → 2027-05-09 (+7d) | 2027-05-11 → 2027-05-24 (+13d) |  |
| CO-TE-MH-200 | Excavation Works for Manholes of Telecom Network for Alignment-RD-02 | 2027-05-02 → 2027-05-09 (+7d) | 2027-05-04 → 2027-05-11 (+7d) | -97d → -103d |
| CO-TE-MH-210 | Installation Works for Manholes of Telecom Network for Alignment-RD-02 | 2027-05-05 → 2027-05-12 (+7d) | 2027-05-08 → 2027-05-20 (+12d) | -97d → -103d |
| CO-TE-MH-220 | Backfilling Works for Manholes of Telecom Network for Alignment-RD-02 | 2027-05-09 → 2027-05-22 (+13d) | 2027-05-11 → 2027-05-24 (+13d) | -97d → -103d |
| DD | **CCTV, Telephone, MSN, ACs System Works** | 2027-05-12 → 2027-05-25 (+13d) | 2027-05-24 → 2027-05-31 (+7d) |  |
| CO-TE-CTV-180 | Installation of CCTV, Telephone, ACS and MSN Systems Cables for Alignment-RD-02 | 2027-05-12 → 2027-05-25 (+13d) | 2027-05-24 → 2027-05-31 (+7d) | -86d → -92d |
| RD | **Road Works** | 2027-05-30 → 2027-06-06 (+7d) | 2027-06-28 → 2027-07-05 (+7d) |  |
| LS | **Pavement Works** | 2027-05-30 → 2027-06-06 (+7d) | 2027-06-14 → 2027-06-21 (+7d) |  |
| CO-RD-PV-200 | Fixing of Curbstone for Sidewalks Pavement for Alignment-RD-02 | 2027-05-30 → 2027-06-06 (+7d) | 2027-06-03 → 2027-06-10 (+7d) | -107d → -113d |
| CO-RD-PV-210 | Fixing of Interlock Tiles for Sidewalks Pavement for Alignment-RD-02 | 2027-06-05 → 2027-06-12 (+7d) | 2027-06-14 → 2027-06-21 (+7d) | -107d → -113d |
| TS | **Traffic Signs Boards and Roads Marking** | 2027-06-20 → 2027-06-27 (+7d) | 2027-06-28 → 2027-07-05 (+7d) |  |
| CO-RD-F-RM-200 | Application of Road Marking Works For Road Works for Alignment-RD-02 | 2027-06-20 → 2027-06-27 (+7d) | 2027-06-23 → 2027-06-30 (+7d) | -111d → -117d |
| CO-RD-F-TS-140 | Installation Works of Traffic Signs Boards For Road Works for Alignment-RD-02 | 2027-06-24 → 2027-07-01 (+7d) | 2027-06-28 → 2027-07-05 (+7d) | -111d → -117d |
| 3 | **Finishes for Infrastructure Networks** | 2027-05-02 → 2027-05-09 (+7d) | 2027-07-12 → 2027-07-19 (+7d) |  |
| 11 | **Storm Drainage Network** | 2027-06-08 → 2027-06-15 (+7d) | 2027-07-12 → 2027-07-19 (+7d) |  |
| TF | **Testing and Finishes** | 2027-06-08 → 2027-06-15 (+7d) | 2027-07-12 → 2027-07-19 (+7d) |  |
| CO-SD-ML-TF-120 | Testing Work for Pipes of Storm Drainage Network for Alignment-RD-02 | 2027-06-08 → 2027-06-15 (+7d) | 2027-06-14 → 2027-06-21 (+7d) | -112d → -118d |
| CO-SD-CB-TF-220 | Catch Basin Internal Finishes (Benching ) for Storm Drainage Network for Alignment-RD-02 | 2027-06-20 → 2027-06-27 (+7d) | 2027-06-26 → 2027-07-03 (+7d) | -122d → -128d |
| CO-SD-MH-TF-250 | Testing Works for Manholes of Storm Drainage Network for Alignment-RD-02 | 2027-06-20 → 2027-06-27 (+7d) | 2027-06-26 → 2027-07-03 (+7d) | -108d → -114d |
| CO-SD-CB-TF-200 | Testing Works for Catch Basins of Storm Drainage Network for Alignment-RD-02 | 2027-06-27 → 2027-07-04 (+7d) | 2027-07-03 → 2027-07-10 (+7d) | -122d → -128d |
| CO-SD-CB-TF-210 | Install Catch Basin Cover Works for External Finishes of Storm Drainage Network for Alignment-RD-02 | 2027-07-04 → 2027-07-11 (+7d) | 2027-07-12 → 2027-07-19 (+7d) | -122d → -128d |
| 10 | **Sewage Network** | 2027-05-06 → 2027-05-13 (+7d) | 2027-06-01 → 2027-06-08 (+7d) |  |
| TF | **Testing and Finishes** | 2027-05-06 → 2027-05-13 (+7d) | 2027-06-01 → 2027-06-08 (+7d) |  |
| CO-SW-TF-270 | Final Testing For Main Line of Sewage Network for Alignment-RD-02 | 2027-05-06 → 2027-05-13 (+7d) | 2027-06-01 → 2027-06-08 (+7d) | -87d → -93d |
| CO-SW-TF-290 | Testing Works for Main Line Manholes of Sewage Network for Alignment-RD-02 | 2027-05-06 → 2027-05-13 (+7d) | 2027-06-01 → 2027-06-08 (+7d) | -87d → -93d |
| 9 | **Potable Water Network** | 2027-05-03 → 2027-05-10 (+7d) | 2027-06-12 → 2027-06-19 (+7d) |  |
| TF | **Testing and Finishes** | 2027-05-03 → 2027-05-10 (+7d) | 2027-06-12 → 2027-06-19 (+7d) |  |
| CO-PW-TF-170 | Fire Hydrant Finishies (S.Box + Safety + Marker Post ) of Potable Water Network for Alignment-RD-02 | 2027-05-03 → 2027-05-10 (+7d) | 2027-05-24 → 2027-05-31 (+7d) | -96d → -102d |
| CO-PW-TF-180 | Final Finishes works and Covers for Valves and Valve Chambers for Alignment-RD-02 | 2027-05-25 → 2027-06-01 (+7d) | 2027-06-02 → 2027-06-09 (+7d) | -96d → -102d |
| CO-PW-TF-160 | Testing of Potable Water Network for Alignment-RD-02 | 2027-06-03 → 2027-06-10 (+7d) | 2027-06-12 → 2027-06-19 (+7d) | -96d → -102d |
| 13 | **Irrigation Network** | 2027-05-20 → 2027-05-27 (+7d) | 2027-05-24 → 2027-05-31 (+7d) |  |
| TF | **Testing and Finishes** | 2027-05-20 → 2027-05-27 (+7d) | 2027-05-24 → 2027-05-31 (+7d) |  |
| CO-IR-TF-180 | Final Testing (pressure tests) of Irrigation Network for Alignment-RD-02 | 2027-05-20 → 2027-05-27 (+7d) | 2027-05-24 → 2027-05-31 (+7d) | -80d → -86d |
| 1 | **Treated Sewage Effluent (Tse)** | 2027-06-05 → 2027-06-12 (+7d) | 2027-06-10 → 2027-06-17 (+7d) |  |
| TF | **Testing and Finishes** | 2027-06-05 → 2027-06-12 (+7d) | 2027-06-10 → 2027-06-17 (+7d) |  |
| CO-TSE-TF-190 | Final Testing (pressure tests) of Treated Sewage Effluent (Tse) for Alignment-RD-02 | 2027-06-05 → 2027-06-12 (+7d) | 2027-06-10 → 2027-06-17 (+7d) | -95d → -101d |
| 14 | **Medium Voltage Network** | 2027-05-02 → 2027-05-09 (+7d) | 2027-05-08 → 2027-05-20 (+12d) |  |
| TT | **Termination and Testing Works** | 2027-05-02 → 2027-05-09 (+7d) | 2027-05-08 → 2027-05-20 (+12d) |  |
| CO-MV-TF-240 | Testing and Termination Works of Medium Voltage Network for Alignment-RD-02 | 2027-05-02 → 2027-05-09 (+7d) | 2027-05-08 → 2027-05-20 (+12d) | -92d → -98d |
| 6 | **Low Voltage Network** | 2027-05-24 → 2027-05-31 (+7d) | 2027-06-02 → 2027-06-09 (+7d) |  |
| TT | **Termination and Testing Works** | 2027-05-24 → 2027-05-31 (+7d) | 2027-06-02 → 2027-06-09 (+7d) |  |
| CON-LV-TT-150 | Testing and Termination Works for Distribution Pillars Units of Low Voltage Network for Alignment-RD-02 | 2027-05-24 → 2027-05-31 (+7d) | 2027-05-27 → 2027-06-03 (+7d) | -87d → -93d |
| CON-LV-TT-140 | Testing and Termination Works for Substation Low Voltage Panel Boards of Low Voltage Network for Alignment-RD-02 | 2027-05-30 → 2027-06-06 (+7d) | 2027-06-02 → 2027-06-09 (+7d) | -88d → -94d |
| 1 | **Earthing System Works** | 2027-05-29 → 2027-06-05 (+7d) | 2027-05-30 → 2027-06-06 (+7d) |  |
| CON-LV-ES-120 | Earthing System Works for Distribution Pillars Units of Low Voltage Network for Alignment-RD-02 | 2027-05-29 → 2027-06-05 (+7d) | 2027-05-30 → 2027-06-06 (+7d) | -85d → -91d |
| 12 | **Street Lighting Network** | 2027-05-31 → 2027-06-07 (+7d) | 2027-06-17 → 2027-06-24 (+7d) |  |
| TR | **Termination and Testing Works** | 2027-05-31 → 2027-06-07 (+7d) | 2027-06-17 → 2027-06-24 (+7d) |  |
| CO-SL-LP-420 | Installation Works for Lighting Fixtures With Drop Wire of Street Lighting Network for Alignment-RD-02 | 2027-05-31 → 2027-06-07 (+7d) | 2027-06-01 → 2027-06-08 (+7d) | -101d → -107d |
| CO-SL-TF-440 | Termination Works For Panel Board Cables of Street Lighting Network for Alignment-RD-02 | 2027-06-08 → 2027-06-15 (+7d) | 2027-06-14 → 2027-06-21 (+7d) | -98d → -104d |
| CO-SL-TF-450 | Testing Works for Lighting Poles of Street Lighting Network for Alignment-RD-02 | 2027-06-16 → 2027-06-23 (+7d) | 2027-06-17 → 2027-06-24 (+7d) | -101d → -107d |
| CO-SL-TF-460 | Testing Works For Panel Board Cables of Street Lighting Network for Alignment-RD-02 | 2027-06-16 → 2027-06-23 (+7d) | 2027-06-17 → 2027-06-24 (+7d) | -101d → -107d |
| ES | **Earthing System Works** | 2027-06-02 → 2027-06-09 (+7d) | 2027-06-15 → 2027-06-22 (+7d) |  |
| CO-SL-ES-260 | Install Earthing System Works for Lighting Poles of Street Lighting Network for Alignment-RD-02 | 2027-06-02 → 2027-06-09 (+7d) | 2027-06-08 → 2027-06-15 (+7d) | -101d → -107d |
| CO-SL-ES-270 | Install Earthing System Works for Lighting Panel Boards of Street Lighting Network for Alignment-RD-02 | 2027-06-09 → 2027-06-16 (+7d) | 2027-06-15 → 2027-06-22 (+7d) | -101d → -107d |
| 3 | **Telecom and Light Current Network** | 2027-05-26 → 2027-06-02 (+7d) | 2027-06-01 → 2027-06-08 (+7d) |  |
| 1 | **Testing and Finishes** | 2027-05-26 → 2027-06-02 (+7d) | 2027-06-01 → 2027-06-08 (+7d) |  |
| CO-TE-CTV-TF-220 | Testing and Interface modules with Telecom for Alignment-RD-02 | 2027-05-26 → 2027-06-02 (+7d) | 2027-05-29 → 2027-06-05 (+7d) | -87d → -93d |
| CO-TE-CTV-TF-350 | Testing and Interface modules with CCTV, Telephone, MSN and Access Control for Alignment-RD-02 | 2027-05-30 → 2027-06-06 (+7d) | 2027-06-01 → 2027-06-08 (+7d) | -87d → -93d |
| 3 | **Alignment-RD-03-1** | 2026-11-16 → 2026-11-23 (+7d) | 2027-06-01 → 2027-06-08 (+7d) |  |
| EW | **Earthworks** | 2026-11-16 → 2026-11-23 (+7d) | 2026-11-29 → 2026-12-06 (+7d) |  |

| ID | Task | Start | Finish | Total float |
| --- | --- | --- | --- | --- |
| EW | **Earthworks** | 2026-11-16 → 2026-11-23 (+7d) | 2026-11-29 → 2026-12-06 (+7d) |  |
| CO-EW-200 | Excavation and Backfilling Works Upto Design Level for Earthworks for Alignment-RD-03-1 | 2026-11-16 → 2026-11-23 (+7d) | 2026-11-29 → 2026-12-06 (+7d) | -121d → -127d |
| SD | **Storm Drainage Network** | 2026-11-30 → 2026-12-07 (+7d) | 2027-01-06 → 2027-01-13 (+7d) |  |
| MH | **Manholes** | 2026-11-30 → 2026-12-07 (+7d) | 2027-01-06 → 2027-01-13 (+7d) |  |
| CO-SD-MH-180 | Trench Excavation and Bedding Works for Manholes of Storm Drainage Network for Alignment-RD-03-1 | 2026-11-30 → 2026-12-07 (+7d) | 2026-12-10 → 2026-12-17 (+7d) | -118d → -124d |
| CO-SD-MH-190 | Install RC Footing Works for Manholes of Storm Drainage Network for Alignment-RD-03-1 | 2026-12-12 → 2026-12-19 (+7d) | 2026-12-14 → 2026-12-21 (+7d) | -118d → -124d |
| CO-SD-MH-200 | Install RC Wall Rings & Slab Works for Manholes of Storm Drainage Network for Alignment-RD-03-1 | 2026-12-15 → 2026-12-22 (+7d) | 2026-12-26 → 2027-01-02 (+7d) | -118d → -124d |
| CO-SD-MH-220 | Backfilling Works for Manholes of Storm Drainage Network for Alignment-RD-03-1 | 2026-12-27 → 2027-01-03 (+7d) | 2027-01-06 → 2027-01-13 (+7d) | -118d → -124d |
| ML | **Main Line Sections** | 2026-12-27 → 2027-01-03 (+7d) | 2027-01-06 → 2027-01-13 (+7d) |  |
| CO-SD-ML-100 | Trench Excavation and Bedding Works for Main Lines of Storm Drainage Network for Alignment-RD-03-1 | 2026-12-27 → 2027-01-03 (+7d) | 2026-12-29 → 2027-01-05 (+7d) | -118d → -124d |
| CO-SD-ML-120 | Pipes Laying Works for Main Lines of Storm Drainage Network for Alignment-RD-03-1 | 2026-12-30 → 2027-01-06 (+7d) | 2027-01-02 → 2027-01-09 (+7d) | -118d → -124d |
| CO-SD-ML-130 | Trench Backfilling and Compaction Works for Main Lines of Storm Drainage Network for Alignment-RD-03-1 | 2027-01-03 → 2027-01-10 (+7d) | 2027-01-06 → 2027-01-13 (+7d) | -118d → -124d |
| TSE | **Treated Sewage Effluent (Tse)** | 2027-01-07 → 2027-01-14 (+7d) | 2027-05-26 → 2027-06-02 (+7d) |  |
| CO-TSE-ML-150 | Trench Excavation and Bedding Works for Main Lines of Treated Sewage Effluent (Tse) for Alignment-RD-03-1 | 2027-01-07 → 2027-01-14 (+7d) | 2027-01-11 → 2027-01-18 (+7d) | -98d → -104d |
| CO-TSE-ML-160 | Pipes Laying Works for Main Lines of Treated Sewage Effluent (Tse) for Alignment-RD-03-1 | 2027-01-16 → 2027-01-23 (+7d) | 2027-01-19 → 2027-01-26 (+7d) | -101d → -107d |
| CO-TSE-ML-170 | Installation Works for Main Line Valves of Treated Sewage Effluent (Tse) for Alignment-RD-03-1 | 2027-01-20 → 2027-01-27 (+7d) | 2027-01-26 → 2027-02-02 (+7d) | -101d → -107d |
| CO-TSE-ML-190 | Installation Works for Valve and Washout Chambers of Treated Sewage Effluent (Tse) for Alignment-RD-03-1 | 2027-01-27 → 2027-02-03 (+7d) | 2027-02-02 → 2027-02-09 (+7d) | -101d → -107d |
| CO-TSE-ML-180 | Trench Backfilling and Compaction Works for Treated Sewage Effluent (Tse) for Alignment-RD-03-1 | 2027-02-03 → 2027-02-10 (+7d) | 2027-02-08 → 2027-02-15 (+7d) | -101d → -107d |
| TA | **Treated Sewage Effluent (Tse) Storage Tank** | 2027-05-20 → 2027-05-27 (+7d) | 2027-05-26 → 2027-06-02 (+7d) |  |
| CO-TSE-TF-180 | Installation of Storage Tank of Treated Sewage Effluent (Tse) for Alignment-RD-03-1 | 2027-05-20 → 2027-05-27 (+7d) | 2027-05-26 → 2027-06-02 (+7d) | -95d → -101d |
| PW | **Potable Water Network** | 2027-02-09 → 2027-02-16 (+7d) | 2027-05-13 → 2027-05-26 (+13d) |  |
| ML | **Main Line Sections** | 2027-02-09 → 2027-02-16 (+7d) | 2027-02-28 → 2027-03-07 (+7d) |  |
| CO-PW-ML-100 | Trench Excavation and Bedding Works for Main Lines of Potable Water Network for Alignment-RD-03-1 | 2027-02-09 → 2027-02-16 (+7d) | 2027-02-14 → 2027-02-21 (+7d) | -101d → -107d |
| CO-PW-ML-110 | Pipes Laying and accessories for Main Lines of Potable Water Network for Alignment-RD-03-1 | 2027-02-15 → 2027-02-22 (+7d) | 2027-02-20 → 2027-02-27 (+7d) | -101d → -107d |
| CO-PW-ML-130 | Trench Backfilling and Compaction Works for Main Lines of Potable Water Network for Alignment-RD-03-1 | 2027-02-21 → 2027-02-28 (+7d) | 2027-02-28 → 2027-03-07 (+7d) | -101d → -107d |
| VC | **Valve Chamber** | 2027-02-11 → 2027-02-18 (+7d) | 2027-03-06 → 2027-03-16 (+10d) |  |
| CO-PW-VC-170 | Excavation Works for Main Line Valves and Valve Chambers of Potable Water Network for Alignment-RD-03-1 | 2027-02-11 → 2027-02-18 (+7d) | 2027-02-14 → 2027-02-21 (+7d) | -87d → -93d |
| CO-PW-VC180 | Installation of Valve Chambers of Potable Water Network for Alignment-RD-03-1 | 2027-02-15 → 2027-02-22 (+7d) | 2027-02-17 → 2027-02-24 (+7d) | -87d → -93d |
| CO-PW-VC-190 | Installation Works for Valves of Potable Water Network for Alignment-RD-03-1 | 2027-02-28 → 2027-03-07 (+7d) | 2027-03-02 → 2027-03-13 (+11d) | -95d → -101d |
| CO-PW-VC-220 | Backfilling Works for Main Line Valves and Valve Chambers of Potable Water Network for Alignment-RD-03-1 | 2027-03-03 → 2027-03-14 (+11d) | 2027-03-06 → 2027-03-16 (+10d) | -95d → -101d |
| FH | **Fire Hydrant** | 2027-02-15 → 2027-02-22 (+7d) | 2027-03-06 → 2027-03-16 (+10d) |  |
| CO-PW-FH-140 | Excavation Works for Fire Hydrants of Potable Water Network for Alignment-RD-03-1 | 2027-02-15 → 2027-02-22 (+7d) | 2027-02-16 → 2027-02-23 (+7d) | -84d → -90d |
| CO-PW-FH-150 | Installation Works for Fire Hydrant of Potable Water Network for Alignment-RD-03-1 | 2027-02-21 → 2027-02-28 (+7d) | 2027-02-22 → 2027-03-01 (+7d) | -87d → -93d |
| CO-PW-FH-160 | Trench Backfilling and Compaction Works for Fire Hydrants of Potable Water Network for Alignment-RD-03-1 | 2027-03-04 → 2027-03-15 (+11d) | 2027-03-06 → 2027-03-16 (+10d) | -95d → -101d |
| TA | **Potable Water Network Storage Tank** | 2027-05-08 → 2027-05-20 (+12d) | 2027-05-13 → 2027-05-26 (+13d) |  |
| CO-PW-TF-130 | Installation of Storage Tank of Potable Water Network for Alignment-RD-03-1 | 2027-05-08 → 2027-05-20 (+12d) | 2027-05-13 → 2027-05-26 (+13d) | -95d → -101d |
| LV | **Low Voltage Network** | 2027-03-01 → 2027-03-08 (+7d) | 2027-05-01 → 2027-05-08 (+7d) |  |
| MLVC | **Main Low Voltage Cables Works ( Cable 300 MM )** | 2027-03-01 → 2027-03-08 (+7d) | 2027-03-25 → 2027-04-01 (+7d) |  |
| CON-LV-ML-100 | Trench Excavation and Bedding Works for Main Cable of Low Voltage Network for Alignment-RD-03-1 | 2027-03-01 → 2027-03-08 (+7d) | 2027-03-13 → 2027-03-20 (+7d) | -101d → -107d |
| CON-LV-ML-110 | Cable Laying Works for Main Cable of Low Voltage Network for Alignment-RD-03-1 | 2027-03-14 → 2027-03-21 (+7d) | 2027-03-21 → 2027-03-28 (+7d) | -101d → -107d |
| CON-LV-ML-120 | Trench Backfilling and Compaction Works for Main Cable of Low Voltage Network for Alignment-RD-03-1 | 2027-03-22 → 2027-03-29 (+7d) | 2027-03-25 → 2027-04-01 (+7d) | -98d → -104d |
| SLVC | **Service Low Voltage Cables Works ( Cable 70 MM )** | 2027-03-14 → 2027-03-21 (+7d) | 2027-04-17 → 2027-04-24 (+7d) |  |
| CON-LV-HC-100 | Trench Excavation and Bedding Works for Service Cable of Low Voltage Network for Alignment-RD-03-1 | 2027-03-14 → 2027-03-21 (+7d) | 2027-03-17 → 2027-03-24 (+7d) | -98d → -104d |
| CON-LV-HC-110 | Cable Laying Works for Service Cable of Low Voltage Network for Alignment-RD-03-1 | 2027-04-06 → 2027-04-13 (+7d) | 2027-04-13 → 2027-04-20 (+7d) | -114d → -120d |
| CON-LV-HC-120 | Trench Backfilling and Compaction Works for Service Cable of Low Voltage Network for Alignment-RD-03-1 | 2027-04-14 → 2027-04-21 (+7d) | 2027-04-17 → 2027-04-24 (+7d) | -114d → -120d |
| DP | **Distribution Pillars Works** | 2027-04-18 → 2027-04-25 (+7d) | 2027-05-01 → 2027-05-08 (+7d) |  |
| CON-LV-DP-100 | Foundation Excavation Works for Distribution Pillars of Low Voltage Network for Alignment-RD-03-1 | 2027-04-18 → 2027-04-25 (+7d) | 2027-04-21 → 2027-04-28 (+7d) | -114d → -120d |
| CON-LV-DP-110 | Pouring Plain Concrete For Distribution Pillar Units of Low Voltage Network for Alignment-RD-03-1 | 2027-04-22 → 2027-04-29 (+7d) | 2027-04-26 → 2027-05-03 (+7d) | -114d → -120d |
| CON-LV-DP-120 | Installation Works for Distribution Pillar Units of Low Voltage Network for Alignment-RD-03-1 | 2027-04-27 → 2027-05-04 (+7d) | 2027-05-01 → 2027-05-08 (+7d) | -114d → -120d |
| SL | **Street Lighting Network** | 2027-03-13 → 2027-03-20 (+7d) | 2027-04-05 → 2027-04-12 (+7d) |  |
| LP | **Lighting Poles Works** | 2027-03-13 → 2027-03-20 (+7d) | 2027-03-31 → 2027-04-07 (+7d) |  |
| CO-SL-LP-550 | Installation Works for Lighting Poles Foundation of Street Lighting Network for Alignment-RD-03-1 | 2027-03-13 → 2027-03-20 (+7d) | 2027-03-17 → 2027-03-24 (+7d) | -99d → -105d |
| CO-SL-LP-560 | Installation Works for Lighting Poles of Street Lighting Network for Alignment-RD-03-1 | 2027-03-20 → 2027-03-27 (+7d) | 2027-03-24 → 2027-03-31 (+7d) | -100d → -106d |
| CO-SL-LP-570 | Backfilling Works for Lighting Poles of Street Lighting Network for Alignment-RD-03-1 | 2027-03-25 → 2027-04-01 (+7d) | 2027-03-31 → 2027-04-07 (+7d) | -96d → -102d |
| CW | **Cabling Works** | 2027-03-25 → 2027-04-01 (+7d) | 2027-04-05 → 2027-04-12 (+7d) |  |
| CO-SL-CL-410 | Cable Laying Works for Street Lighting Network for Alignment-RD-03-1 | 2027-03-25 → 2027-04-01 (+7d) | 2027-03-30 → 2027-04-06 (+7d) | -100d → -106d |
| CO-SL-CL-420 | Trench Backfilling and Compaction Works for Street Lighting Network for Alignment-RD-03-1 | 2027-03-31 → 2027-04-07 (+7d) | 2027-04-05 → 2027-04-12 (+7d) | -100d → -106d |
| TE | **Telecom and Light Current Network** | 2027-04-18 → 2027-04-25 (+7d) | 2027-04-28 → 2027-05-05 (+7d) |  |
| PD | **Ducts Works** | 2027-04-18 → 2027-04-25 (+7d) | 2027-04-26 → 2027-05-03 (+7d) |  |
| CO-TE-DW-110 | Pipes Laying Works for Ducts of Telecom Network for Alignment-RD-03-1 | 2027-04-18 → 2027-04-25 (+7d) | 2027-04-21 → 2027-04-28 (+7d) | -110d → -116d |
| CO-TE-DW-130 | Trench Backfilling and Compaction Works for Ducts of Telecom Network for Alignment-RD-03-1 | 2027-04-22 → 2027-04-29 (+7d) | 2027-04-26 → 2027-05-03 (+7d) | -110d → -116d |
| MH | **Manholes Works** | 2027-04-18 → 2027-04-25 (+7d) | 2027-04-24 → 2027-05-01 (+7d) |  |
| CO-TE-MH-140 | Excavation Works for Manholes of Telecom Network for Alignment-RD-03-1 | 2027-04-18 → 2027-04-25 (+7d) | 2027-04-19 → 2027-04-26 (+7d) | -108d → -114d |
| CO-TE-MH-150 | Installation Works for Manholes of Telecom Network for Alignment-RD-03-1 | 2027-04-20 → 2027-04-27 (+7d) | 2027-04-21 → 2027-04-28 (+7d) | -108d → -114d |
| CO-TE-MH-160 | Backfilling Works for Manholes of Telecom Network for Alignment-RD-03-1 | 2027-04-22 → 2027-04-29 (+7d) | 2027-04-24 → 2027-05-01 (+7d) | -108d → -114d |
| DD | **CCTV, Telephone, MSN, ACs System Works** | 2027-04-25 → 2027-05-02 (+7d) | 2027-04-28 → 2027-05-05 (+7d) |  |
| CO-TE-CTV-110 | Installation of CCTV, Telephone, ACS and MSN Systems Cables for Alignment-RD-03-1 | 2027-04-25 → 2027-05-02 (+7d) | 2027-04-28 → 2027-05-05 (+7d) | -87d → -93d |
| RD | **Road Works** | 2027-05-02 → 2027-05-09 (+7d) | 2027-06-01 → 2027-06-08 (+7d) |  |
| RD | **Pre-Bituminous Construction** | 2027-05-02 → 2027-05-09 (+7d) | 2027-05-23 → 2027-05-30 (+7d) |  |
| CO-RD-PB-140 | Subgrade Layer for Road Works for Alignment-RD-03-1 | 2027-05-02 → 2027-05-09 (+7d) | 2027-05-09 → 2027-05-22 (+13d) | -114d → -120d |

| ID | Task | Start | Finish | Total float |
| --- | --- | --- | --- | --- |
| CO-RD-PB-150 | Aggregate Base Course Layer for Road Works for Alignment-RD-03-1 | 2027-05-10 → 2027-05-23 (+13d) | 2027-05-23 → 2027-05-30 (+7d) | -88d → -94d |
| 1 | **Bituminous Construction** | 2027-05-10 → 2027-05-23 (+13d) | 2027-05-13 → 2027-05-26 (+13d) |  |
| CO-RD-B-160 | Bituminous Base Courses Layers for Road Works for Alignment-RD-03-1 | 2027-05-10 → 2027-05-23 (+13d) | 2027-05-11 → 2027-05-24 (+13d) | -88d → -94d |
| CON-RD-MR-150 | Preparation of Asphaltic Wearing Course Layer for Roads Network for Alignment-RD-03-1 | 2027-05-12 → 2027-05-25 (+13d) | 2027-05-13 → 2027-05-26 (+13d) | -85d → -91d |
| LS | **Pavement Works** | 2027-05-12 → 2027-05-25 (+13d) | 2027-06-01 → 2027-06-08 (+7d) |  |
| CO-RD-PV-160 | Fixing of Curbstone for Sidewalks Pavement for Alignment-RD-03-1 | 2027-05-12 → 2027-05-25 (+13d) | 2027-05-23 → 2027-05-30 (+7d) | -88d → -94d |
| CO-RD-PV-170 | Fixing of Interlock Tiles for Sidewalks Pavement for Alignment-RD-03-1 | 2027-05-24 → 2027-05-31 (+7d) | 2027-06-01 → 2027-06-08 (+7d) | -88d → -94d |
| TS | **Traffic Signs Boards and Roads Marking** | 2027-05-24 → 2027-05-31 (+7d) | 2027-05-30 → 2027-06-06 (+7d) |  |
| CO-RD-F-RM-180 | Application of Road Marking Works For Road Works for Alignment-RD-03-1 | 2027-05-24 → 2027-05-31 (+7d) | 2027-05-25 → 2027-06-01 (+7d) | -88d → -94d |
| CO-RD-F-TS-120 | Installation Works of Traffic Signs Boards For Road Works for Alignment-RD-03-1 | 2027-05-29 → 2027-06-05 (+7d) | 2027-05-30 → 2027-06-06 (+7d) | -90d → -96d |
| 3 | **Finishes for Infrastructure Networks** | 2027-04-29 → 2027-05-06 (+7d) | 2027-05-30 → 2027-06-06 (+7d) |  |
| 11 | **Storm Drainage Network** | 2027-05-08 → 2027-05-20 (+12d) | 2027-05-13 → 2027-05-26 (+13d) |  |
| TF | **Testing and Finishes** | 2027-05-08 → 2027-05-20 (+12d) | 2027-05-13 → 2027-05-26 (+13d) |  |
| CO-SD-ML-TF-100 | Testing Work for Pipes of Storm Drainage Network for Alignment-RD-03-1 | 2027-05-08 → 2027-05-20 (+12d) | 2027-05-10 → 2027-05-23 (+13d) | -98d → -104d |
| CO-SD-MH-TF-210 | Testing Works for Manholes of Storm Drainage Network for Alignment-RD-03-1 | 2027-05-11 → 2027-05-24 (+13d) | 2027-05-13 → 2027-05-26 (+13d) | -82d → -88d |
| 9 | **Potable Water Network** | 2027-05-03 → 2027-05-10 (+7d) | 2027-05-06 → 2027-05-13 (+7d) |  |
| TF | **Testing and Finishes** | 2027-05-03 → 2027-05-10 (+7d) | 2027-05-06 → 2027-05-13 (+7d) |  |
| CO-PW-TF-100 | Final Finishes works and Covers for Valves and Valve Chambers for Alignment-RD-03-1 | 2027-05-03 → 2027-05-10 (+7d) | 2027-05-06 → 2027-05-13 (+7d) | -95d → -101d |
| CO-PW-TF-110 | Testing of Potable Water Network for Alignment-RD-03-1 | 2027-05-03 → 2027-05-10 (+7d) | 2027-05-04 → 2027-05-11 (+7d) | -81d → -87d |
| CO-PW-TF-120 | Fire Hydrant Finishies (S.Box + Safety + Marker Post ) of Potable Water Network for Alignment-RD-03-1 | 2027-05-03 → 2027-05-10 (+7d) | 2027-05-05 → 2027-05-12 (+7d) | -96d → -102d |
| 1 | **Treated Sewage Effluent (Tse)** | 2027-05-27 → 2027-06-03 (+7d) | 2027-05-27 → 2027-06-03 (+7d) |  |
| TF | **Testing and Finishes** | 2027-05-27 → 2027-06-03 (+7d) | 2027-05-27 → 2027-06-03 (+7d) |  |
| CO-TSE-TF-170 | Final Testing (pressure tests) of Treated Sewage Effluent (Tse) for Alignment-RD-03-1 | 2027-05-27 → 2027-06-03 (+7d) | 2027-05-27 → 2027-06-03 (+7d) | -95d → -101d |
| 6 | **Low Voltage Network** | 2027-05-02 → 2027-05-09 (+7d) | 2027-05-05 → 2027-05-12 (+7d) |  |
| TT | **Termination and Testing Works** | 2027-05-02 → 2027-05-09 (+7d) | 2027-05-05 → 2027-05-12 (+7d) |  |
| CON-LV-TT-110 | Testing and Termination Works for Distribution Pillars Units of Low Voltage Network for Alignment-RD-03-1 | 2027-05-02 → 2027-05-09 (+7d) | 2027-05-03 → 2027-05-10 (+7d) | -85d → -91d |
| CON-LV-TT-100 | Testing and Termination Works for Substation Low Voltage Panel Boards of Low Voltage Network for Alignment-RD-03-1 | 2027-05-04 → 2027-05-11 (+7d) | 2027-05-05 → 2027-05-12 (+7d) | -75d → -81d |
| 1 | **Earthing System Works** | 2027-05-04 → 2027-05-11 (+7d) | 2027-05-05 → 2027-05-12 (+7d) |  |
| CON-LV-ES-100 | Earthing System Works for Distribution Pillars Units of Low Voltage Network for Alignment-RD-03-1 | 2027-05-04 → 2027-05-11 (+7d) | 2027-05-05 → 2027-05-12 (+7d) | -85d → -91d |
| 12 | **Street Lighting Network** | 2027-05-03 → 2027-05-10 (+7d) | 2027-05-30 → 2027-06-06 (+7d) |  |
| TR | **Termination and Testing Works** | 2027-05-03 → 2027-05-10 (+7d) | 2027-05-30 → 2027-06-06 (+7d) |  |
| CO-SL-LP-580 | Installation Works for Lighting Fixtures With Drop Wire of Street Lighting Network for Alignment-RD-03-1 | 2027-05-03 → 2027-05-10 (+7d) | 2027-05-09 → 2027-05-22 (+13d) | -92d → -98d |
| CO-SL-TF-570 | Testing Works for Lighting Poles of Street Lighting Network for Alignment-RD-03-1 | 2027-05-24 → 2027-05-31 (+7d) | 2027-05-30 → 2027-06-06 (+7d) | -91d → -97d |
| ES | **Earthing System Works** | 2027-05-11 → 2027-05-24 (+13d) | 2027-05-22 → 2027-05-29 (+7d) |  |
| CO-SL-ES-320 | Install Earthing System Works for Lighting Poles of Street Lighting Network for Alignment-RD-03-1 | 2027-05-11 → 2027-05-24 (+13d) | 2027-05-13 → 2027-05-26 (+13d) | -93d → -99d |
| CO-SL-ES-330 | Install Earthing System Works for Lighting Panel Boards of Street Lighting Network for Alignment-RD-03-1 | 2027-05-20 → 2027-05-27 (+7d) | 2027-05-22 → 2027-05-29 (+7d) | -92d → -98d |
| 3 | **Telecom and Light Current Network** | 2027-04-29 → 2027-05-06 (+7d) | 2027-05-05 → 2027-05-12 (+7d) |  |
| 1 | **Testing and Finishes** | 2027-04-29 → 2027-05-06 (+7d) | 2027-05-05 → 2027-05-12 (+7d) |  |
| CO-TE-CTV-TF-140 | Testing and Interface modules with Telecom for Alignment-RD-03-1 | 2027-04-29 → 2027-05-06 (+7d) | 2027-05-05 → 2027-05-12 (+7d) | -87d → -93d |
| CO-TE-CTV-TF-330 | Testing and Interface modules with CCTV, Telephone, MSN and Access Control for Alignment-RD-03-1 | 2027-04-29 → 2027-05-06 (+7d) | 2027-05-05 → 2027-05-12 (+7d) | -87d → -93d |
| 2 | **Alignment-RD-03-2** | 2026-11-16 → 2026-11-23 (+7d) | 2027-07-05 → 2027-07-12 (+7d) |  |
| EW | **Earthworks** | 2026-11-16 → 2026-11-23 (+7d) | 2026-11-29 → 2026-12-06 (+7d) |  |
| EW | **Earthworks** | 2026-11-16 → 2026-11-23 (+7d) | 2026-11-29 → 2026-12-06 (+7d) |  |
| CO-EW-240 | Excavation and Backfilling Works Upto Design Level for Earthworks for Alignment-RD-03-2 | 2026-11-16 → 2026-11-23 (+7d) | 2026-11-29 → 2026-12-06 (+7d) | -66d → -72d |
| SD | **Storm Drainage Network** | 2027-01-07 → 2027-01-14 (+7d) | 2027-03-02 → 2027-03-13 (+11d) |  |
| MH | **Manholes** | 2027-01-07 → 2027-01-14 (+7d) | 2027-02-17 → 2027-02-24 (+7d) |  |
| CO-SD-MH-350 | Trench Excavation and Bedding Works for Manholes of Storm Drainage Network for Alignment-RD-03-2 | 2027-01-07 → 2027-01-14 (+7d) | 2027-01-18 → 2027-01-25 (+7d) | -99d → -105d |
| CO-SD-MH-360 | Install RC Footing Works for Manholes of Storm Drainage Network for Alignment-RD-03-2 | 2027-01-19 → 2027-01-26 (+7d) | 2027-01-28 → 2027-02-04 (+7d) | -99d → -105d |
| CO-SD-MH-370 | Install RC Wall Rings & Slab Works for Manholes of Storm Drainage Network for Alignment-RD-03-2 | 2027-01-30 → 2027-02-06 (+7d) | 2027-02-09 → 2027-02-16 (+7d) | -99d → -105d |
| CO-SD-MH-380 | Backfilling Works for Manholes of Storm Drainage Network for Alignment-RD-03-2 | 2027-02-10 → 2027-02-17 (+7d) | 2027-02-17 → 2027-02-24 (+7d) | -88d → -94d |
| ML | **Main Line Sections** | 2027-02-10 → 2027-02-17 (+7d) | 2027-03-02 → 2027-03-13 (+11d) |  |
| CO-SD-ML-230 | Trench Excavation and Bedding Works for Main Lines of Storm Drainage Network for Alignment-RD-03-2 | 2027-02-10 → 2027-02-17 (+7d) | 2027-02-17 → 2027-02-24 (+7d) | -99d → -105d |
| CO-SD-ML-240 | Pipes Laying Works for Main Lines of Storm Drainage Network for Alignment-RD-03-2 | 2027-02-18 → 2027-02-25 (+7d) | 2027-02-23 → 2027-03-02 (+7d) | -99d → -105d |
| CO-SD-ML-250 | Trench Backfilling and Compaction Works for Main Lines of Storm Drainage Network for Alignment-RD-03-2 | 2027-02-24 → 2027-03-03 (+7d) | 2027-03-02 → 2027-03-13 (+11d) | -99d → -105d |
| MV | **Medium Voltage Network** | 2027-03-03 → 2027-03-14 (+11d) | 2027-03-22 → 2027-03-29 (+7d) |  |
| CW | **Cabling Works** | 2027-03-03 → 2027-03-14 (+11d) | 2027-03-22 → 2027-03-29 (+7d) |  |
| CO-MV-ML-370 | Trench Excavation and Bedding Works for Medium Voltage Network for Alignment-RD-03-2 | 2027-03-03 → 2027-03-14 (+11d) | 2027-03-08 → 2027-03-18 (+10d) | -99d → -105d |
| CO-MV-ML-380 | Duct Laying Works for Medium Voltage Network for Alignment-RD-03-2 | 2027-03-13 → 2027-03-20 (+7d) | 2027-03-17 → 2027-03-24 (+7d) | -95d → -101d |
| CO-MV-ML-390 | Trench Backfilling and Compaction Works for Medium Voltage Network for Alignment-RD-03-2 | 2027-03-18 → 2027-03-25 (+7d) | 2027-03-22 → 2027-03-29 (+7d) | -95d → -101d |
| LV | **Low Voltage Network** | 2027-04-06 → 2027-04-13 (+7d) | 2027-05-10 → 2027-05-23 (+13d) |  |
| MLVC | **Main Low Voltage Cables Works ( Cable 300 MM )** | 2027-04-06 → 2027-04-13 (+7d) | 2027-04-29 → 2027-05-06 (+7d) |  |
| CON-LV-ML-220 | Trench Excavation and Bedding Works for Main Cable of Low Voltage Network for Alignment-RD-03-2 | 2027-04-06 → 2027-04-13 (+7d) | 2027-04-12 → 2027-04-19 (+7d) | -107d → -113d |
| CON-LV-ML-230 | Cable Laying Works for Main Cable of Low Voltage Network for Alignment-RD-03-2 | 2027-04-13 → 2027-04-20 (+7d) | 2027-04-22 → 2027-04-29 (+7d) | -107d → -113d |
| CON-LV-ML-240 | Trench Backfilling and Compaction Works for Main Cable of Low Voltage Network for Alignment-RD-03-2 | 2027-04-24 → 2027-05-01 (+7d) | 2027-04-29 → 2027-05-06 (+7d) | -104d → -110d |
| SLVC | **Service Low Voltage Cables Works ( Cable 70 MM )** | 2027-04-13 → 2027-04-20 (+7d) | 2027-05-10 → 2027-05-23 (+13d) |  |
| CON-LV-HC-220 | Trench Excavation and Bedding Works for Service Cable of Low Voltage Network for Alignment-RD-03-2 | 2027-04-13 → 2027-04-20 (+7d) | 2027-04-18 → 2027-04-25 (+7d) | -103d → -109d |
| CON-LV-HC-230 | Cable Laying Works for Service Cable of Low Voltage Network for Alignment-RD-03-2 | 2027-04-24 → 2027-05-01 (+7d) | 2027-05-03 → 2027-05-10 (+7d) | -107d → -113d |
| CON-LV-HC-240 | Trench Backfilling and Compaction Works for Service Cable of Low Voltage Network for Alignment-RD-03-2 | 2027-05-04 → 2027-05-11 (+7d) | 2027-05-10 → 2027-05-23 (+13d) | -107d → -113d |
| DP | **Distribution Pillars Works** | 2027-04-14 → 2027-04-21 (+7d) | 2027-04-26 → 2027-05-03 (+7d) |  |
| CON-LV-DP-220 | Foundation Excavation Works for Distribution Pillars of Low Voltage Network for Alignment-RD-03-2 | 2027-04-14 → 2027-04-21 (+7d) | 2027-04-21 → 2027-04-28 (+7d) | -95d → -101d |

| ID | Task | Start | Finish | Total float |
| --- | --- | --- | --- | --- |
| CON-LV-DP-230 | Pouring Plain Concrete For Distribution Pillar Units of Low Voltage Network for Alignment-RD-03-2 | 2027-04-22 → 2027-04-29 (+7d) | 2027-04-24 → 2027-05-01 (+7d) | -95d → -101d |
| CON-LV-DP-240 | Installation Works for Distribution Pillar Units of Low Voltage Network for Alignment-RD-03-2 | 2027-04-25 → 2027-05-02 (+7d) | 2027-04-26 → 2027-05-03 (+7d) | -95d → -101d |
| SL | **Street Lighting Network** | 2027-03-13 → 2027-03-20 (+7d) | 2027-04-18 → 2027-04-25 (+7d) |  |
| LP | **Lighting Poles Works** | 2027-03-13 → 2027-03-20 (+7d) | 2027-03-31 → 2027-04-07 (+7d) |  |
| CO-SL-LP-500 | Installation Works for Lighting Poles Foundation of Street Lighting Network for Alignment-RD-03-2 | 2027-03-13 → 2027-03-20 (+7d) | 2027-03-17 → 2027-03-24 (+7d) | -88d → -94d |
| CO-SL-LP-510 | Installation Works for Lighting Poles of Street Lighting Network for Alignment-RD-03-2 | 2027-03-20 → 2027-03-27 (+7d) | 2027-03-24 → 2027-03-31 (+7d) | -89d → -95d |
| CO-SL-LP-520 | Backfilling Works for Lighting Poles of Street Lighting Network for Alignment-RD-03-2 | 2027-03-25 → 2027-04-01 (+7d) | 2027-03-31 → 2027-04-07 (+7d) | -85d → -91d |
| CW | **Cabling Works** | 2027-04-07 → 2027-04-14 (+7d) | 2027-04-18 → 2027-04-25 (+7d) |  |
| CO-SL-CL-380 | Cable Laying Works for Street Lighting Network for Alignment-RD-03-2 | 2027-04-07 → 2027-04-14 (+7d) | 2027-04-12 → 2027-04-19 (+7d) | -100d → -106d |
| CO-SL-CL-390 | Trench Backfilling and Compaction Works for Street Lighting Network for Alignment-RD-03-2 | 2027-04-13 → 2027-04-20 (+7d) | 2027-04-18 → 2027-04-25 (+7d) | -100d → -106d |
| TE | **Telecom and Light Current Network** | 2027-05-11 → 2027-05-24 (+13d) | 2027-05-13 → 2027-05-26 (+13d) |  |
| DD | **CCTV, Telephone, MSN, ACs System Works** | 2027-05-11 → 2027-05-24 (+13d) | 2027-05-13 → 2027-05-26 (+13d) |  |
| CO-TE-CTV-240 | Installation of CCTV, Telephone, ACS and MSN Systems Cables for Alignment-RD-03-2 | 2027-05-11 → 2027-05-24 (+13d) | 2027-05-13 → 2027-05-26 (+13d) | -90d → -96d |
| RD | **Road Works** | 2027-05-24 → 2027-05-31 (+7d) | 2027-07-05 → 2027-07-12 (+7d) |  |
| RD | **Pre-Bituminous Construction** | 2027-05-24 → 2027-05-31 (+7d) | 2027-06-03 → 2027-06-10 (+7d) |  |
| CO-RD-PB-220 | Subgrade Layer for Road Works for Alignment-RD-03-2 | 2027-05-24 → 2027-05-31 (+7d) | 2027-05-29 → 2027-06-05 (+7d) | -113d → -119d |
| CO-RD-PB-230 | Installation of Aggregate Base Course Layer and Interlock Works for Road Works for Alignment-RD-03-2 | 2027-05-30 → 2027-06-06 (+7d) | 2027-06-03 → 2027-06-10 (+7d) | -113d → -119d |
| 1 | **Bituminous Construction** | 2027-06-05 → 2027-06-12 (+7d) | 2027-06-28 → 2027-07-05 (+7d) |  |
| CO-RD-B-240 | Bituminous Base Courses Layers for Road Works for Alignment-RD-03-2 | 2027-06-05 → 2027-06-12 (+7d) | 2027-06-07 → 2027-06-14 (+7d) | -113d → -119d |
| CON-RD-MR-230 | Preparation of Asphaltic Wearing Course Layer for Roads Network for Alignment-RD-03-2 | 2027-06-26 → 2027-07-03 (+7d) | 2027-06-28 → 2027-07-05 (+7d) | -117d → -123d |
| LS | **Pavement Works** | 2027-06-08 → 2027-06-15 (+7d) | 2027-06-23 → 2027-06-30 (+7d) |  |
| CO-RD-PV-240 | Fixing of Curbstone for Sidewalks Pavement for Alignment-RD-03-2 | 2027-06-08 → 2027-06-15 (+7d) | 2027-06-15 → 2027-06-22 (+7d) | -113d → -119d |
| CO-RD-PV-250 | Fixing of Interlock Tiles for Sidewalks Pavement for Alignment-RD-03-2 | 2027-06-16 → 2027-06-23 (+7d) | 2027-06-23 → 2027-06-30 (+7d) | -113d → -119d |
| TS | **Traffic Signs Boards and Roads Marking** | 2027-06-29 → 2027-07-06 (+7d) | 2027-07-05 → 2027-07-12 (+7d) |  |
| CO-RD-F-RM-220 | Application of Road Marking Works For Road Works for Alignment-RD-03-2 | 2027-06-29 → 2027-07-06 (+7d) | 2027-07-01 → 2027-07-08 (+7d) | -117d → -123d |
| CO-RD-F-TS-160 | Installation Works of Traffic Signs Boards For Road Works for Alignment-RD-03-2 | 2027-07-03 → 2027-07-10 (+7d) | 2027-07-05 → 2027-07-12 (+7d) | -117d → -123d |
| 3 | **Finishes for Infrastructure Networks** | 2027-03-23 → 2027-03-30 (+7d) | 2027-06-24 → 2027-07-01 (+7d) |  |
| 11 | **Storm Drainage Network** | 2027-06-07 → 2027-06-14 (+7d) | 2027-06-24 → 2027-07-01 (+7d) |  |
| TF | **Testing and Finishes** | 2027-06-07 → 2027-06-14 (+7d) | 2027-06-24 → 2027-07-01 (+7d) |  |
| CO-SD-MH-TF-290 | Testing Works for Manholes of Storm Drainage Network for Alignment-RD-03-2 | 2027-06-07 → 2027-06-14 (+7d) | 2027-06-13 → 2027-06-20 (+7d) | -107d → -113d |
| CO-SD-CB-TF-260 | Testing Works for Catch Basins of Storm Drainage Network for Alignment-RD-03-2 | 2027-06-15 → 2027-06-22 (+7d) | 2027-06-24 → 2027-07-01 (+7d) | -117d → -123d |
| 14 | **Medium Voltage Network** | 2027-03-23 → 2027-03-30 (+7d) | 2027-03-29 → 2027-04-05 (+7d) |  |
| TT | **Termination and Testing Works** | 2027-03-23 → 2027-03-30 (+7d) | 2027-03-29 → 2027-04-05 (+7d) |  |
| CO-MV-TF-260 | Testing and Termination Works of Medium Voltage Network for Alignment-RD-03-2 | 2027-03-23 → 2027-03-30 (+7d) | 2027-03-29 → 2027-04-05 (+7d) | -58d → -64d |
| 6 | **Low Voltage Network** | 2027-04-27 → 2027-05-04 (+7d) | 2027-05-24 → 2027-05-31 (+7d) |  |
| TT | **Termination and Testing Works** | 2027-04-27 → 2027-05-04 (+7d) | 2027-05-24 → 2027-05-31 (+7d) |  |
| CON-LV-TT-190 | Testing and Termination Works for Distribution Pillars Units of Low Voltage Network for Alignment-RD-03-2 | 2027-04-27 → 2027-05-04 (+7d) | 2027-05-03 → 2027-05-10 (+7d) | -74d → -80d |
| CON-LV-TT-180 | Testing and Termination Works for Substation Low Voltage Panel Boards of Low Voltage Network for Alignment-RD-03-2 | 2027-05-11 → 2027-05-24 (+13d) | 2027-05-24 → 2027-05-31 (+7d) | -80d → -86d |
| 1 | **Earthing System Works** | 2027-05-04 → 2027-05-11 (+7d) | 2027-05-05 → 2027-05-12 (+7d) |  |
| CON-LV-ES-140 | Earthing System Works for Distribution Pillars Units of Low Voltage Network for Alignment-RD-03-2 | 2027-05-04 → 2027-05-11 (+7d) | 2027-05-05 → 2027-05-12 (+7d) | -69d → -75d |
| 12 | **Street Lighting Network** | 2027-04-26 → 2027-05-03 (+7d) | 2027-05-23 → 2027-05-30 (+7d) |  |
| TR | **Termination and Testing Works** | 2027-04-26 → 2027-05-03 (+7d) | 2027-05-23 → 2027-05-30 (+7d) |  |
| CO-SL-LP-530 | Installation Works for Lighting Fixtures With Drop Wire of Street Lighting Network for Alignment-RD-03-2 | 2027-04-26 → 2027-05-03 (+7d) | 2027-05-02 → 2027-05-09 (+7d) | -106d → -112d |
| CO-SL-TF-530 | Testing Works for Lighting Poles of Street Lighting Network for Alignment-RD-03-2 | 2027-05-11 → 2027-05-24 (+13d) | 2027-05-23 → 2027-05-30 (+7d) | -113d → -119d |
| ES | **Earthing System Works** | 2027-05-11 → 2027-05-24 (+13d) | 2027-05-22 → 2027-05-29 (+7d) |  |
| CO-SL-ES-300 | Install Earthing System Works for Lighting Poles of Street Lighting Network for Alignment-RD-03-2 | 2027-05-11 → 2027-05-24 (+13d) | 2027-05-13 → 2027-05-26 (+13d) | -78d → -84d |
| CO-SL-ES-310 | Install Earthing System Works for Lighting Panel Boards of Street Lighting Network for Alignment-RD-03-2 | 2027-05-20 → 2027-05-27 (+7d) | 2027-05-22 → 2027-05-29 (+7d) | -78d → -84d |
| 3 | **Telecom and Light Current Network** | 2027-05-20 → 2027-05-27 (+7d) | 2027-05-24 → 2027-05-31 (+7d) |  |
| 1 | **Testing and Finishes** | 2027-05-20 → 2027-05-27 (+7d) | 2027-05-24 → 2027-05-31 (+7d) |  |
| CO-TE-CTV-TF-320 | Testing and Interface modules with CCTV, Telephone, MSN and Access Control for Alignment-RD-03-2 | 2027-05-20 → 2027-05-27 (+7d) | 2027-05-24 → 2027-05-31 (+7d) | -90d → -96d |
| 4 | **Alignment-RD-03-3** | 2026-11-30 → 2026-12-07 (+7d) | 2027-06-07 → 2027-06-14 (+7d) |  |
| EW | **Earthworks** | 2026-11-30 → 2026-12-07 (+7d) | 2026-12-12 → 2026-12-19 (+7d) |  |
| EW | **Earthworks** | 2026-11-30 → 2026-12-07 (+7d) | 2026-12-12 → 2026-12-19 (+7d) |  |
| CO-EW-230 | Excavation and Backfilling Works Upto Design Level for Earthworks for Alignment-RD-03-3 | 2026-11-30 → 2026-12-07 (+7d) | 2026-12-12 → 2026-12-19 (+7d) | -121d → -127d |
| SD | **Storm Drainage Network** | 2026-12-30 → 2027-01-06 (+7d) | 2027-01-10 → 2027-01-17 (+7d) |  |
| ML | **Main Line Sections** | 2026-12-30 → 2027-01-06 (+7d) | 2027-01-10 → 2027-01-17 (+7d) |  |
| CO-SD-ML-200 | Trench Excavation and Bedding Works for Main Lines of Storm Drainage Network for Alignment-RD-03-3 | 2026-12-30 → 2027-01-06 (+7d) | 2027-01-02 → 2027-01-09 (+7d) | -117d → -123d |
| CO-SD-ML-210 | Pipes Laying Works for Main Lines of Storm Drainage Network for Alignment-RD-03-3 | 2027-01-03 → 2027-01-10 (+7d) | 2027-01-05 → 2027-01-12 (+7d) | -117d → -123d |
| CO-SD-ML-220 | Trench Backfilling and Compaction Works for Main Lines of Storm Drainage Network for Alignment-RD-03-3 | 2027-01-07 → 2027-01-14 (+7d) | 2027-01-10 → 2027-01-17 (+7d) | -118d → -124d |
| TSE | **Treated Sewage Effluent (Tse)** | 2027-01-11 → 2027-01-18 (+7d) | 2027-02-17 → 2027-02-24 (+7d) |  |
| CO-TSE-ML-300 | Trench Excavation and Bedding Works for Main Lines of Treated Sewage Effluent (Tse) for Alignment-RD-03-3 | 2027-01-11 → 2027-01-18 (+7d) | 2027-01-23 → 2027-01-30 (+7d) | -93d → -99d |
| CO-TSE-ML-310 | Pipes Laying Works for Main Lines of Treated Sewage Effluent (Tse) for Alignment-RD-03-3 | 2027-01-24 → 2027-01-31 (+7d) | 2027-02-04 → 2027-02-11 (+7d) | -93d → -99d |
| CO-TSE-ML-330 | Trench Backfilling and Compaction Works for Treated Sewage Effluent (Tse) for Alignment-RD-03-3 | 2027-02-06 → 2027-02-13 (+7d) | 2027-02-17 → 2027-02-24 (+7d) | -93d → -99d |
| PW | **Potable Water Network** | 2027-02-18 → 2027-02-25 (+7d) | 2027-03-30 → 2027-04-06 (+7d) |  |
| ML | **Main Line Sections** | 2027-02-18 → 2027-02-25 (+7d) | 2027-03-28 → 2027-04-04 (+7d) |  |
| CO-PW-ML-200 | Trench Excavation and Bedding Works for Main Lines of Potable Water Network for Alignment-RD-03-3 | 2027-02-18 → 2027-02-25 (+7d) | 2027-03-01 → 2027-03-08 (+7d) | -93d → -99d |
| CO-PW-ML-210 | Pipes Laying and accessories for Main Lines of Potable Water Network for Alignment-RD-03-3 | 2027-03-02 → 2027-03-13 (+11d) | 2027-03-16 → 2027-03-23 (+7d) | -93d → -99d |
| CO-PW-ML-220 | Trench Backfilling and Compaction Works for Main Lines of Potable Water Network for Alignment-RD-03-3 | 2027-03-17 → 2027-03-24 (+7d) | 2027-03-28 → 2027-04-04 (+7d) | -85d → -91d |
| VC | **Valve Chamber** | 2027-02-18 → 2027-02-25 (+7d) | 2027-03-30 → 2027-04-06 (+7d) |  |
| CO-PW-VC-290 | Excavation Works for Main Line Valves and Valve Chambers of Potable Water Network for Alignment-RD-03-3 | 2027-02-18 → 2027-02-25 (+7d) | 2027-03-01 → 2027-03-08 (+7d) | -71d → -77d |

| ID | Task | Start | Finish | Total float |
| --- | --- | --- | --- | --- |
| CO-PW-VC210 | Installation of Valve Chambers of Potable Water Network for Alignment-RD-03-3 | 2027-03-02 → 2027-03-13 (+11d) | 2027-03-16 → 2027-03-23 (+7d) | -71d → -77d |
| CO-PW-VC-300 | Installation Works for Valves of Potable Water Network for Alignment-RD-03-3 | 2027-03-17 → 2027-03-24 (+7d) | 2027-03-27 → 2027-04-03 (+7d) | -71d → -77d |
| CO-PW-VC-310 | Backfilling Works for Main Line Valves and Valve Chambers of Potable Water Network for Alignment-RD-03-3 | 2027-03-28 → 2027-04-04 (+7d) | 2027-03-30 → 2027-04-06 (+7d) | -71d → -77d |
| FH | **Fire Hydrant** | 2027-03-02 → 2027-03-13 (+11d) | 2027-03-30 → 2027-04-06 (+7d) |  |
| CO-PW-FH-230 | Excavation Works for Fire Hydrants of Potable Water Network for Alignment-RD-03-3 | 2027-03-02 → 2027-03-13 (+11d) | 2027-03-16 → 2027-03-23 (+7d) | -71d → -77d |
| CO-PW-FH-240 | Installation Works for Fire Hydrant of Potable Water Network for Alignment-RD-03-3 | 2027-03-17 → 2027-03-24 (+7d) | 2027-03-28 → 2027-04-04 (+7d) | -71d → -77d |
| CO-PW-FH-250 | Trench Backfilling and Compaction Works for Fire Hydrants of Potable Water Network for Alignment-RD-03-3 | 2027-03-29 → 2027-04-05 (+7d) | 2027-03-30 → 2027-04-06 (+7d) | -71d → -77d |
| IR | **Irrigation Network** | 2027-03-02 → 2027-03-13 (+11d) | 2027-03-30 → 2027-04-06 (+7d) |  |
| ML | **Main Line Pipes** | 2027-03-02 → 2027-03-13 (+11d) | 2027-03-30 → 2027-04-06 (+7d) |  |
| CO-IR-ML-350 | Trench Excavation and Bedding Works for Main Lines of Irrigation Network for Alignment-RD-03-3 | 2027-03-02 → 2027-03-13 (+11d) | 2027-03-16 → 2027-03-23 (+7d) | -93d → -99d |
| CO-IR-ML-360 | Pipes Laying Works for Main Lines of Irrigation Network for Alignment-RD-03-3 | 2027-03-17 → 2027-03-24 (+7d) | 2027-03-20 → 2027-03-27 (+7d) | -93d → -99d |
| CO-IR-ML-370 | Installation Works for Main Line Valves of Irrigation Network for Alignment-RD-03-3 | 2027-03-21 → 2027-03-28 (+7d) | 2027-03-23 → 2027-03-30 (+7d) | -93d → -99d |
| CO-IR-ML-390 | Installation Works for Bulbblers And Sprinkler and Irrigation Control System of Irrigation Network for Alignment-RD-03-3 | 2027-03-24 → 2027-03-31 (+7d) | 2027-03-27 → 2027-04-03 (+7d) | -93d → -99d |
| CO-IR-ML-380 | Trench Backfilling and Compaction Works for Main Lines of Irrigation Network for Alignment-RD-03-3 | 2027-03-28 → 2027-04-04 (+7d) | 2027-03-30 → 2027-04-06 (+7d) | -93d → -99d |
| MV | **Medium Voltage Network** | 2027-03-29 → 2027-04-05 (+7d) | 2027-04-07 → 2027-04-14 (+7d) |  |
| CW | **Cabling Works** | 2027-03-29 → 2027-04-05 (+7d) | 2027-04-07 → 2027-04-14 (+7d) |  |
| CO-MV-ML-340 | Trench Excavation and Bedding Works for Medium Voltage Network for Alignment-RD-03-3 | 2027-03-29 → 2027-04-05 (+7d) | 2027-03-31 → 2027-04-07 (+7d) | -85d → -91d |
| CO-MV-ML-350 | Duct Laying Works for Medium Voltage Network for Alignment-RD-03-3 | 2027-04-01 → 2027-04-08 (+7d) | 2027-04-04 → 2027-04-11 (+7d) | -85d → -91d |
| CO-MV-ML-360 | Trench Backfilling and Compaction Works for Medium Voltage Network for Alignment-RD-03-3 | 2027-04-05 → 2027-04-12 (+7d) | 2027-04-07 → 2027-04-14 (+7d) | -85d → -91d |
| LV | **Low Voltage Network** | 2027-04-08 → 2027-04-15 (+7d) | 2027-05-10 → 2027-05-23 (+13d) |  |
| MLVC | **Main Low Voltage Cables Works ( Cable 300 MM )** | 2027-04-08 → 2027-04-15 (+7d) | 2027-04-28 → 2027-05-05 (+7d) |  |
| CON-LV-ML-190 | Trench Excavation and Bedding Works for Main Cable of Low Voltage Network for Alignment-RD-03-3 | 2027-04-08 → 2027-04-15 (+7d) | 2027-04-15 → 2027-04-22 (+7d) | -85d → -91d |
| CON-LV-ML-200 | Cable Laying Works for Main Cable of Low Voltage Network for Alignment-RD-03-3 | 2027-04-17 → 2027-04-24 (+7d) | 2027-04-24 → 2027-05-01 (+7d) | -85d → -91d |
| CON-LV-ML-210 | Trench Backfilling and Compaction Works for Main Cable of Low Voltage Network for Alignment-RD-03-3 | 2027-04-25 → 2027-05-02 (+7d) | 2027-04-28 → 2027-05-05 (+7d) | -79d → -85d |
| SLVC | **Service Low Voltage Cables Works ( Cable 70 MM )** | 2027-04-17 → 2027-04-24 (+7d) | 2027-05-05 → 2027-05-12 (+7d) |  |
| CON-LV-HC-190 | Trench Excavation and Bedding Works for Service Cable of Low Voltage Network for Alignment-RD-03-3 | 2027-04-17 → 2027-04-24 (+7d) | 2027-04-24 → 2027-05-01 (+7d) | -85d → -91d |
| CON-LV-HC-200 | Cable Laying Works for Service Cable of Low Voltage Network for Alignment-RD-03-3 | 2027-04-25 → 2027-05-02 (+7d) | 2027-05-02 → 2027-05-09 (+7d) | -85d → -91d |
| CON-LV-HC-210 | Trench Backfilling and Compaction Works for Service Cable of Low Voltage Network for Alignment-RD-03-3 | 2027-05-03 → 2027-05-10 (+7d) | 2027-05-05 → 2027-05-12 (+7d) | -85d → -91d |
| DP | **Distribution Pillars Works** | 2027-05-06 → 2027-05-13 (+7d) | 2027-05-10 → 2027-05-23 (+13d) |  |
| CON-LV-DP-190 | Installation Works for Distribution Pillar Units of Low Voltage Network for Alignment-RD-03-3 | 2027-05-06 → 2027-05-13 (+7d) | 2027-05-10 → 2027-05-23 (+13d) | -81d → -87d |
| SL | **Street Lighting Network** | 2027-04-08 → 2027-04-15 (+7d) | 2027-04-28 → 2027-05-05 (+7d) |  |
| LP | **Lighting Poles Works** | 2027-04-08 → 2027-04-15 (+7d) | 2027-04-28 → 2027-05-05 (+7d) |  |
| CO-SL-LP-450 | Installation Works for Lighting Poles Foundation of Street Lighting Network for Alignment-RD-03-3 | 2027-04-08 → 2027-04-15 (+7d) | 2027-04-14 → 2027-04-21 (+7d) | -83d → -89d |
| CO-SL-LP-460 | Installation Works for Lighting Poles of Street Lighting Network for Alignment-RD-03-3 | 2027-04-15 → 2027-04-22 (+7d) | 2027-04-21 → 2027-04-28 (+7d) | -83d → -89d |
| CO-SL-LP-480 | Backfilling Works for Lighting Poles of Street Lighting Network for Alignment-RD-03-3 | 2027-04-22 → 2027-04-29 (+7d) | 2027-04-28 → 2027-05-05 (+7d) | -83d → -89d |
| CW | **Cabling Works** | 2027-04-22 → 2027-04-29 (+7d) | 2027-04-28 → 2027-05-05 (+7d) |  |
| CO-SL-CL-350 | Cable Laying Works for Street Lighting Network for Alignment-RD-03-3 | 2027-04-22 → 2027-04-29 (+7d) | 2027-04-28 → 2027-05-05 (+7d) | -83d → -89d |
| CO-SL-CL-360 | Trench Backfilling and Compaction Works for Street Lighting Network for Alignment-RD-03-3 | 2027-04-22 → 2027-04-29 (+7d) | 2027-04-28 → 2027-05-05 (+7d) | -83d → -89d |
| TE | **Telecom and Light Current Network** | 2027-04-20 → 2027-04-27 (+7d) | 2027-05-23 → 2027-05-30 (+7d) |  |
| PD | **Ducts Works** | 2027-05-06 → 2027-05-13 (+7d) | 2027-05-23 → 2027-05-30 (+7d) |  |
| CO-TE-DW-230 | Pipes Laying Works for Ducts of Telecom Network for Alignment-RD-03-3 | 2027-05-06 → 2027-05-13 (+7d) | 2027-05-12 → 2027-05-25 (+13d) | -85d → -91d |
| CO-TE-DW-240 | Trench Backfilling and Compaction Works for Ducts of Telecom Network for Alignment-RD-03-3 | 2027-05-13 → 2027-05-26 (+13d) | 2027-05-23 → 2027-05-30 (+7d) | -85d → -91d |
| MH | **Manholes Works** | 2027-04-20 → 2027-04-27 (+7d) | 2027-04-28 → 2027-05-05 (+7d) |  |
| CO-TE-MH-230 | Excavation Works for Manholes of Telecom Network for Alignment-RD-03-3 | 2027-04-20 → 2027-04-27 (+7d) | 2027-04-21 → 2027-04-28 (+7d) | -84d → -90d |
| CO-TE-MH-240 | Installation Works for Manholes of Telecom Network for Alignment-RD-03-3 | 2027-04-22 → 2027-04-29 (+7d) | 2027-04-25 → 2027-05-02 (+7d) | -84d → -90d |
| CO-TE-MH-250 | Backfilling Works for Manholes of Telecom Network for Alignment-RD-03-3 | 2027-04-26 → 2027-05-03 (+7d) | 2027-04-28 → 2027-05-05 (+7d) | -84d → -90d |
| DD | **CCTV, Telephone, MSN, ACs System Works** | 2027-04-29 → 2027-05-06 (+7d) | 2027-05-02 → 2027-05-09 (+7d) |  |
| CO-TE-CTV-210 | Installation of CCTV, Telephone, ACS and MSN Systems Cables for Alignment-RD-03-3 | 2027-04-29 → 2027-05-06 (+7d) | 2027-05-02 → 2027-05-09 (+7d) | -84d → -90d |
| RD | **Road Works** | 2027-05-24 → 2027-05-31 (+7d) | 2027-06-03 → 2027-06-10 (+7d) |  |
| LS | **Pavement Works** | 2027-05-24 → 2027-05-31 (+7d) | 2027-05-27 → 2027-06-03 (+7d) |  |
| CO-RD-PV-220 | Fixing of Curbstone for Sidewalks Pavement for Alignment-RD-03-3 | 2027-05-24 → 2027-05-31 (+7d) | 2027-05-27 → 2027-06-03 (+7d) | -87d → -93d |
| CO-RD-PV-230 | Fixing of Interlock Tiles for Sidewalks Pavement for Alignment-RD-03-3 | 2027-05-24 → 2027-05-31 (+7d) | 2027-05-27 → 2027-06-03 (+7d) | -87d → -93d |
| TS | **Traffic Signs Boards and Roads Marking** | 2027-05-24 → 2027-05-31 (+7d) | 2027-06-03 → 2027-06-10 (+7d) |  |
| CO-RD-F-RM-210 | Application of Road Marking Works For Road Works for Alignment-RD-03-3 | 2027-05-24 → 2027-05-31 (+7d) | 2027-05-26 → 2027-06-02 (+7d) | -87d → -93d |
| CO-RD-F-TS-150 | Installation Works of Traffic Signs Boards For Road Works for Alignment-RD-03-3 | 2027-05-31 → 2027-06-07 (+7d) | 2027-06-03 → 2027-06-10 (+7d) | -90d → -96d |
| 3 | **Finishes for Infrastructure Networks** | 2027-04-08 → 2027-04-15 (+7d) | 2027-06-07 → 2027-06-14 (+7d) |  |
| 11 | **Storm Drainage Network** | 2027-06-02 → 2027-06-09 (+7d) | 2027-06-07 → 2027-06-14 (+7d) |  |
| TF | **Testing and Finishes** | 2027-06-02 → 2027-06-09 (+7d) | 2027-06-07 → 2027-06-14 (+7d) |  |
| CO-SD-ML-TF-130 | Testing Work for Pipes of Storm Drainage Network for Alignment-RD-03-3 | 2027-06-02 → 2027-06-09 (+7d) | 2027-06-07 → 2027-06-14 (+7d) | -112d → -118d |
| 9 | **Potable Water Network** | 2027-05-03 → 2027-05-10 (+7d) | 2027-05-10 → 2027-05-23 (+13d) |  |
| TF | **Testing and Finishes** | 2027-05-03 → 2027-05-10 (+7d) | 2027-05-10 → 2027-05-23 (+13d) |  |
| CO-PW-TF-200 | Fire Hydrant Finishies (S.Box + Safety + Marker Post ) of Potable Water Network for Alignment-RD-03-3 | 2027-05-03 → 2027-05-10 (+7d) | 2027-05-05 → 2027-05-12 (+7d) | -96d → -102d |
| CO-PW-TF-190 | Testing of Potable Water Network for Alignment-RD-03-3 | 2027-05-06 → 2027-05-13 (+7d) | 2027-05-09 → 2027-05-22 (+13d) | -84d → -90d |
| CO-PW-TF-210 | Final Finishes works and Covers for Valves and Valve Chambers for Alignment-RD-03-3 | 2027-05-06 → 2027-05-13 (+7d) | 2027-05-10 → 2027-05-23 (+13d) | -89d → -95d |
| 1 | **Treated Sewage Effluent (Tse)** | 2027-05-29 → 2027-06-05 (+7d) | 2027-06-03 → 2027-06-10 (+7d) |  |
| TF | **Testing and Finishes** | 2027-05-29 → 2027-06-05 (+7d) | 2027-06-03 → 2027-06-10 (+7d) |  |
| CO-TSE-TF-200 | Final Testing (pressure tests) of Treated Sewage Effluent (Tse) for Alignment-RD-03-3 | 2027-05-29 → 2027-06-05 (+7d) | 2027-06-03 → 2027-06-10 (+7d) | -95d → -101d |
| 13 | **Irrigation Network** | 2027-05-06 → 2027-05-13 (+7d) | 2027-05-12 → 2027-05-25 (+13d) |  |
| TF | **Testing and Finishes** | 2027-05-06 → 2027-05-13 (+7d) | 2027-05-12 → 2027-05-25 (+13d) |  |
| CO-IR-TF-210 | Final Testing (pressure tests) of Irrigation Network for Alignment-RD-03-3 | 2027-05-06 → 2027-05-13 (+7d) | 2027-05-12 → 2027-05-25 (+13d) | -81d → -87d |

| ID | Task | Start | Finish | Complete | Total float |
| --- | --- | --- | --- | --- | --- |
| 14 | **Medium Voltage Network** | 2027-04-08 → 2027-04-15 (+7d) | 2027-04-14 → 2027-04-21 (+7d) |  |  |
| TT | **Termination and Testing Works** | 2027-04-08 → 2027-04-15 (+7d) | 2027-04-14 → 2027-04-21 (+7d) |  |  |
| CO-MV-TF-250 | Testing and Termination Works of Medium Voltage Network for Alignment-RD-03-3 | 2027-04-08 → 2027-04-15 (+7d) | 2027-04-14 → 2027-04-21 (+7d) |  | -78d → -84d |
| 6 | **Low Voltage Network** | 2027-05-11 → 2027-05-24 (+13d) | 2027-05-23 → 2027-05-30 (+7d) |  |  |
| TT | **Termination and Testing Works** | 2027-05-11 → 2027-05-24 (+13d) | 2027-05-23 → 2027-05-30 (+7d) |  |  |
| CON-LV-TT-160 | Testing and Termination Works for Substation Low Voltage Panel Boards of Low Voltage Network for Alignment-RD-03-3 | 2027-05-11 → 2027-05-24 (+13d) | 2027-05-23 → 2027-05-30 (+7d) |  | -79d → -85d |
| 12 | **Street Lighting Network** | 2027-05-10 → 2027-05-23 (+13d) | 2027-06-06 → 2027-06-13 (+7d) |  |  |
| TR | **Termination and Testing Works** | 2027-05-10 → 2027-05-23 (+13d) | 2027-06-06 → 2027-06-13 (+7d) |  |  |
| CO-SL-LP-470 | Installation Works for Lighting Fixtures With Drop Wire of Street Lighting Network for Alignment-RD-03-3 | 2027-05-10 → 2027-05-23 (+13d) | 2027-05-22 → 2027-05-29 (+7d) |  | -92d → -98d |
| CO-SL-TF-490 | Testing Works for Lighting Poles of Street Lighting Network for Alignment-RD-03-3 | 2027-05-31 → 2027-06-07 (+7d) | 2027-06-06 → 2027-06-13 (+7d) |  | -91d → -97d |
| ES | **Earthing System Works** | 2027-05-11 → 2027-05-24 (+13d) | 2027-05-29 → 2027-06-05 (+7d) |  |  |
| CO-SL-ES-280 | Install Earthing System Works for Lighting Poles of Street Lighting Network for Alignment-RD-03-3 | 2027-05-11 → 2027-05-24 (+13d) | 2027-05-23 → 2027-05-30 (+7d) |  | -93d → -99d |
| CO-SL-ES-290 | Install Earthing System Works for Lighting Panel Boards of Street Lighting Network for Alignment-RD-03-3 | 2027-05-23 → 2027-05-30 (+7d) | 2027-05-29 → 2027-06-05 (+7d) |  | -92d → -98d |
| 3 | **Telecom and Light Current Network** | 2027-05-06 → 2027-05-13 (+7d) | 2027-05-25 → 2027-06-01 (+7d) |  |  |
| 1 | **Testing and Finishes** | 2027-05-06 → 2027-05-13 (+7d) | 2027-05-25 → 2027-06-01 (+7d) |  |  |
| CO-TE-CTV-TF-260 | Testing and Interface modules with Telecom for Alignment-RD-03-3 | 2027-05-06 → 2027-05-13 (+7d) | 2027-05-12 → 2027-05-25 (+13d) |  | -87d → -93d |
| CO-TE-CTV-TF-340 | Testing and Interface modules with CCTV, Telephone, MSN and Access Control for Alignment-RD-03-3 | 2027-05-13 → 2027-05-26 (+13d) | 2027-05-25 → 2027-06-01 (+7d) |  | -87d → -93d |
| EX | **External** |  | 2027-06-02 → 2027-06-09 (+7d) |  |  |
| 2 | **External Road - 1 - 1** |  | 2027-05-29 → 2027-06-05 (+7d) |  |  |
| EW | **Earthworks** |  | 2026-12-22 → 2026-12-29 (+7d) |  |  |
| EW | **Earthworks** |  | 2026-12-22 → 2026-12-29 (+7d) |  |  |
| CO-EW-250_R | Excavation and Backfilling Works Upto Design Level for Earthworks for External Road - 1 - 1(Remaining) | 2026-12-14 → 2026-12-21 (+7d) | 2026-12-22 → 2026-12-29 (+7d) |  | -49d → -55d |
| RD | **Road Works** |  | 2027-05-29 → 2027-06-05 (+7d) |  |  |
| 3 | **Road 01** |  | 2027-05-29 → 2027-06-05 (+7d) |  |  |
| RD | **Pre-Bituminous Construction** |  | 2027-04-22 → 2027-04-29 (+7d) |  |  |
| CO-RD-PB-240 | Subgrade Layer for Road Works for External Road - 1 - 1 |  | 2027-04-12 → 2027-04-19 (+7d) |  | -80d → -86d |
| CO-RD-PB-250 | Aggregate Base Course Layer for Road Works for External Road - 1 - 1 |  | 2027-04-22 → 2027-04-29 (+7d) |  | -80d → -86d |
| 1 | **Bituminous Construction** |  | 2027-05-02 → 2027-05-09 (+7d) |  |  |
| CO-RD-B-260 | Bituminous Base Courses Layers for Road Works for External Road - 1 - 1 |  | 2027-04-27 → 2027-05-04 (+7d) | 42% → 88% | -80d → -86d |
| CON-RD-MR-250 | Preparation of Asphaltic Wearing Course Layer for Roads Network for External Road - 1 - 1 | 2027-04-28 → 2027-05-05 (+7d) | 2027-05-02 → 2027-05-09 (+7d) |  | -71d → -77d |
| LS | **Pavement Works** | 2027-04-28 → 2027-05-05 (+7d) | 2027-05-13 → 2027-05-26 (+13d) |  |  |
| CO-RD-PV-260 | Fixing of Curbstone for Sidewalks Pavement for External Road - 1 - 1 | 2027-04-28 → 2027-05-05 (+7d) | 2027-05-06 → 2027-05-13 (+7d) |  | -80d → -86d |
| CO-RD-PV-270 | Fixing of Interlock Tiles for Sidewalks Pavement for External Road - 1 - 1 | 2027-05-08 → 2027-05-20 (+12d) | 2027-05-13 → 2027-05-26 (+13d) |  | -80d → -86d |
| TS | **Traffic Signs Boards and Roads Marking** | 2027-05-20 → 2027-05-27 (+7d) | 2027-05-29 → 2027-06-05 (+7d) |  |  |
| CO-RD-F-RM-230 | Application of Road Marking Works For Road Works for External Road - 1 - 1 | 2027-05-20 → 2027-05-27 (+7d) | 2027-05-22 → 2027-05-29 (+7d) |  | -80d → -86d |
| CO-RD-F-TS-170 | Installation Works of Traffic Signs Boards For Road Works for External Road - 1 - 1 | 2027-05-29 → 2027-06-05 (+7d) | 2027-05-29 → 2027-06-05 (+7d) |  | -85d → -91d |
| 4 | **External Road - 1 - 2** |  | 2027-05-31 → 2027-06-07 (+7d) |  |  |
| EW | **Earthworks** |  | 2027-01-12 → 2027-01-19 (+7d) |  |  |
| EW | **Earthworks** |  | 2027-01-12 → 2027-01-19 (+7d) |  |  |
| CO-EW-280_R | Excavation and Backfilling Works Upto Design Level for Earthworks for External Road - 1 - 2(Remaining) |  | 2027-01-12 → 2027-01-19 (+7d) |  | -49d → -55d |
| RD | **Road Works** | 2027-04-04 → 2027-04-11 (+7d) | 2027-05-31 → 2027-06-07 (+7d) |  |  |
| 3 | **Road 01** | 2027-04-04 → 2027-04-11 (+7d) | 2027-05-31 → 2027-06-07 (+7d) |  |  |
| RD | **Pre-Bituminous Construction** | 2027-04-04 → 2027-04-11 (+7d) | 2027-04-17 → 2027-04-24 (+7d) |  |  |
| CO-RD-PB-300 | Subgrade Layer for Road Works for External Road - 1 - 2 | 2027-04-04 → 2027-04-11 (+7d) | 2027-04-10 → 2027-04-17 (+7d) |  | -80d → -86d |
| CO-RD-PB-310 | Aggregate Base Course Layer for Road Works for External Road - 1 - 2 | 2027-04-11 → 2027-04-18 (+7d) | 2027-04-17 → 2027-04-24 (+7d) |  | -80d → -86d |
| 1 | **Bituminous Construction** | 2027-04-18 → 2027-04-25 (+7d) | 2027-04-29 → 2027-05-06 (+7d) |  |  |
| CO-RD-B-320 | Bituminous Base Courses Layers for Road Works for External Road - 1 - 2 | 2027-04-18 → 2027-04-25 (+7d) | 2027-04-25 → 2027-05-02 (+7d) |  | -80d → -86d |
| CON-RD-MR-310 | Preparation of Asphaltic Wearing Course Layer for Roads Network for External Road - 1 - 2 | 2027-04-26 → 2027-05-03 (+7d) | 2027-04-29 → 2027-05-06 (+7d) |  | -72d → -78d |
| LS | **Pavement Works** | 2027-04-26 → 2027-05-03 (+7d) | 2027-05-09 → 2027-05-22 (+13d) |  |  |
| CO-RD-PV-320 | Fixing of Curbstone for Sidewalks Pavement for External Road - 1 - 2 | 2027-04-26 → 2027-05-03 (+7d) | 2027-05-02 → 2027-05-09 (+7d) |  | -80d → -86d |
| CO-RD-PV-330 | Fixing of Interlock Tiles for Sidewalks Pavement for External Road - 1 - 2 | 2027-05-03 → 2027-05-10 (+7d) | 2027-05-09 → 2027-05-22 (+13d) |  | -80d → -86d |
| TS | **Traffic Signs Boards and Roads Marking** | 2027-05-10 → 2027-05-23 (+13d) | 2027-05-31 → 2027-06-07 (+7d) |  |  |
| CO-RD-F-RM-260 | Application of Road Marking Works For Road Works for External Road - 1 - 2 | 2027-05-10 → 2027-05-23 (+13d) | 2027-05-13 → 2027-05-26 (+13d) |  | -80d → -86d |
| CO-RD-F-TS-200 | Installation Works of Traffic Signs Boards For Road Works for External Road - 1 - 2 | 2027-05-29 → 2027-06-05 (+7d) | 2027-05-31 → 2027-06-07 (+7d) |  | -87d → -93d |
| 1 | **External Road - 2** |  | 2027-05-30 → 2027-06-06 (+7d) |  |  |
| EW | **Earthworks** |  | 2027-02-21 → 2027-02-28 (+7d) |  |  |
| EW | **Earthworks** |  | 2027-02-21 → 2027-02-28 (+7d) |  |  |
| CO-EW-260_R | Excavation and Backfilling Works Upto Design Level for Earthworks for External Road - 2(Remaining) | 2027-01-28 → 2027-02-04 (+7d) | 2027-02-21 → 2027-02-28 (+7d) |  | -62d → -68d |
| RD | **Road Works** |  | 2027-05-30 → 2027-06-06 (+7d) |  |  |
| 3 | **Road 01** |  | 2027-05-30 → 2027-06-06 (+7d) |  |  |
| RD | **Pre-Bituminous Construction** |  | 2027-04-04 → 2027-04-11 (+7d) |  |  |
| CO-RD-PB-260 | Subgrade Layer for Road Works for External Road - 2 |  | 2027-04-04 → 2027-04-11 (+7d) |  | -81d → -87d |
| CO-RD-PB-270 | Aggregate Base Course Layer for Road Works for External Road - 2 |  | 2027-04-04 → 2027-04-11 (+7d) |  | -81d → -87d |
| 1 | **Bituminous Construction** | 2027-04-05 → 2027-04-12 (+7d) | 2027-04-27 → 2027-05-04 (+7d) |  |  |
| CO-RD-B-280 | Bituminous Base Courses Layers for Road Works for External Road - 2 | 2027-04-05 → 2027-04-12 (+7d) | 2027-04-15 → 2027-04-22 (+7d) |  | -81d → -87d |
| CON-RD-MR-270 | Preparation of Asphaltic Wearing Course Layer for Roads Network for External Road - 2 | 2027-04-17 → 2027-04-24 (+7d) | 2027-04-27 → 2027-05-04 (+7d) |  | -79d → -85d |
| LS | **Pavement Works** | 2027-04-17 → 2027-04-24 (+7d) | 2027-04-26 → 2027-05-03 (+7d) |  |  |
| CO-RD-PV-280 | Fixing of Curbstone for Sidewalks Pavement for External Road - 2 | 2027-04-17 → 2027-04-24 (+7d) | 2027-04-26 → 2027-05-03 (+7d) |  | -72d → -78d |
| CO-RD-PV-290 | Fixing of Interlock Tiles for Sidewalks Pavement for External Road - 2 | 2027-04-17 → 2027-04-24 (+7d) | 2027-04-26 → 2027-05-03 (+7d) |  | -72d → -78d |
| TS | **Traffic Signs Boards and Roads Marking** | 2027-05-10 → 2027-05-23 (+13d) | 2027-05-30 → 2027-06-06 (+7d) |  |  |

| ID | Task | Start | Finish | Total float |
| --- | --- | --- | --- | --- |
| CO-RD-F-RM-240 | Application of Road Marking Works For Road Works for External Road - 2 | 2027-05-10 → 2027-05-23 (+13d) | 2027-05-26 → 2027-06-02 (+7d) | -83d → -89d |
| CO-RD-F-TS-180 | Installation Works of Traffic Signs Boards For Road Works for External Road - 2 | 2027-05-29 → 2027-06-05 (+7d) | 2027-05-30 → 2027-06-06 (+7d) | -89d → -95d |
| 3 | **External Road - 3** |  | 2027-06-02 → 2027-06-09 (+7d) |  |
| EW | **Earthworks** |  | 2027-03-01 → 2027-03-08 (+7d) |  |
| EW | **Earthworks** |  | 2027-03-01 → 2027-03-08 (+7d) |  |
| CO-EW-270_R | Excavation and Backfilling Works Upto Design Level for Earthworks for External Road - 3(Remaining) |  | 2027-03-01 → 2027-03-08 (+7d) | -62d → -68d |
| TE | **Telecom and Light Current Network** | 2027-02-09 → 2027-02-16 (+7d) | 2027-04-03 → 2027-04-10 (+7d) |  |
| MH | **Manholes Works** | 2027-02-09 → 2027-02-16 (+7d) | 2027-03-27 → 2027-04-03 (+7d) |  |
| CO-TE-MH-290 | Excavation Works for Manholes of Telecom Network for External Road - 3 | 2027-02-09 → 2027-02-16 (+7d) | 2027-03-01 → 2027-03-08 (+7d) | -81d → -87d |
| CO-TE-MH-300 | Installation Works for Manholes of Telecom Network for External Road - 3 | 2027-03-02 → 2027-03-13 (+11d) | 2027-03-27 → 2027-04-03 (+7d) | -81d → -87d |
| CO-TE-MH-310 | Backfilling Works for Manholes of Telecom Network for External Road - 3 | 2027-03-21 → 2027-03-28 (+7d) | 2027-03-27 → 2027-04-03 (+7d) | -81d → -87d |
| 1 | **Testing and Finishes** | 2027-03-28 → 2027-04-04 (+7d) | 2027-04-03 → 2027-04-10 (+7d) |  |
| CO-TE-CTV-TF-360 | Testing and Interface modules with Telecom for External Road - 3 | 2027-03-28 → 2027-04-04 (+7d) | 2027-04-03 → 2027-04-10 (+7d) | -81d → -87d |
| RD | **Road Works** |  | 2027-06-02 → 2027-06-09 (+7d) |  |
| 3 | **Road 01** |  | 2027-06-02 → 2027-06-09 (+7d) |  |
| RD | **Pre-Bituminous Construction** |  | 2027-04-12 → 2027-04-19 (+7d) |  |
| CO-RD-PB-280 | Subgrade Layer for Road Works for External Road - 3 |  | 2027-04-03 → 2027-04-10 (+7d) | -80d → -86d |
| CO-RD-PB-290 | Aggregate Base Course Layer for Road Works for External Road - 3 |  | 2027-04-12 → 2027-04-19 (+7d) | -78d → -84d |
| 1 | **Bituminous Construction** | 2027-04-17 → 2027-04-24 (+7d) | 2027-05-12 → 2027-05-25 (+13d) |  |
| CO-RD-B-300 | Bituminous Base Courses Layers for Road Works for External Road - 3 | 2027-04-17 → 2027-04-24 (+7d) | 2027-04-29 → 2027-05-06 (+7d) | -81d → -87d |
| CON-RD-MR-290 | Preparation of Asphaltic Wearing Course Layer for Roads Network for External Road - 3 | 2027-05-01 → 2027-05-08 (+7d) | 2027-05-12 → 2027-05-25 (+13d) | -81d → -87d |
| LS | **Pavement Works** | 2027-05-01 → 2027-05-08 (+7d) | 2027-05-03 → 2027-05-10 (+7d) |  |
| CO-RD-PV-300 | Fixing of Curbstone for Sidewalks Pavement for External Road - 3 | 2027-05-01 → 2027-05-08 (+7d) | 2027-05-03 → 2027-05-10 (+7d) | -73d → -79d |
| CO-RD-PV-310 | Fixing of Interlock Tiles for Sidewalks Pavement for External Road - 3 | 2027-05-01 → 2027-05-08 (+7d) | 2027-05-03 → 2027-05-10 (+7d) | -70d → -76d |
| TS | **Traffic Signs Boards and Roads Marking** | 2027-05-13 → 2027-05-26 (+13d) | 2027-06-02 → 2027-06-09 (+7d) |  |
| CO-RD-F-RM-250 | Application of Road Marking Works For Road Works for External Road - 3 | 2027-05-13 → 2027-05-26 (+13d) | 2027-05-24 → 2027-05-31 (+7d) | -81d → -87d |
| CO-RD-F-TS-190 | Installation Works of Traffic Signs Boards For Road Works for External Road - 3 | 2027-05-31 → 2027-06-07 (+7d) | 2027-06-02 → 2027-06-09 (+7d) | -89d → -95d |
| GEN | **Superstructure Work** |  | 2027-07-01 → 2027-07-08 (+7d) |  |
| 4 | **Utility Buildings** |  | 2027-07-01 → 2027-07-08 (+7d) |  |
| 4 | **Water Pump Station** |  | 2027-07-01 → 2027-07-08 (+7d) |  |
| 1 | **Civil work** |  | 2026-12-03 → 2026-12-10 (+7d) |  |
| 2 | **Super structure** |  | 2026-12-03 → 2026-12-10 (+7d) |  |
| CO-UB-PS-240 | pouring for pump roof | 2026-11-24 → 2026-12-01 (+7d) | 2026-11-25 → 2026-12-02 (+7d) | -55d → -61d |
| CO-UB-PS-250 | curing and deshuttering formwork for pump roof | 2026-11-26 → 2026-12-03 (+7d) | 2026-12-03 → 2026-12-10 (+7d) | -55d → -61d |
| 2 | **Architectural work** | 2026-12-05 → 2026-12-12 (+7d) | 2027-01-07 → 2027-01-14 (+7d) |  |
| CO-UB-PS-260 | Executing Masonry Works for Water Pump station building | 2026-12-05 → 2026-12-12 (+7d) | 2026-12-12 → 2026-12-19 (+7d) | -55d → -61d |
| CO-UB-PS-270 | Executing Plastering Works for Pump station building | 2026-12-13 → 2026-12-20 (+7d) | 2026-12-20 → 2026-12-27 (+7d) | -55d → -61d |
| CO-UB-PS-280 | Executing Painting and Finishes Works for Pump station building | 2026-12-21 → 2026-12-28 (+7d) | 2026-12-29 → 2027-01-05 (+7d) | -55d → -61d |
| CO-UB-PS-320 | Doors and windows Fixing &Stair Tiles | 2026-12-30 → 2027-01-06 (+7d) | 2027-01-07 → 2027-01-14 (+7d) | -55d → -61d |
| 4 | **Mechanical work** | 2027-01-21 → 2027-01-28 (+7d) | 2027-07-01 → 2027-07-08 (+7d) |  |
| CO-UB-PS-340 | Executing HVAC System for Water Pump station building | 2027-01-21 → 2027-01-28 (+7d) | 2027-02-01 → 2027-02-08 (+7d) | -18d → -24d |
| CO-UB-PS-360 | Executing Fire fighting institution works(piping and wire installation) for Water Pump station building | 2027-06-02 → 2027-06-09 (+7d) | 2027-06-13 → 2027-06-20 (+7d) | -113d → -119d |
| CO-UB-PS-380 | Executing Plummbing works for Water Pump station building | 2027-06-14 → 2027-06-21 (+7d) | 2027-06-24 → 2027-07-01 (+7d) | -113d → -119d |
| CO-UB-PS-390 | Installation of pumps | 2027-06-26 → 2027-07-03 (+7d) | 2027-07-01 → 2027-07-08 (+7d) | -113d → -119d |
| 3 | **Sewage Lift Station** |  | 2027-01-17 → 2027-01-24 (+7d) |  |
| 1 | **Civil work** |  | 2027-01-13 → 2027-01-20 (+7d) |  |
| 2 | **Super structure** |  | 2027-01-13 → 2027-01-20 (+7d) |  |
| CO-UB-LS-360 | pouring for pump roof |  | 2026-12-30 → 2027-01-06 (+7d) | 40d → 34d |
| CO-UB-LS-370 | curing and deshuttering formwork for pump roof | 2026-12-31 → 2027-01-07 (+7d) | 2027-01-13 → 2027-01-20 (+7d) | 40d → 34d |
| 2 | **Architectural work** | 2027-01-14 → 2027-01-21 (+7d) | 2027-01-17 → 2027-01-24 (+7d) |  |
| CO-UB-LS-390 | Executing Plastering and Finishes Works for Sewage Lift Station | 2027-01-14 → 2027-01-21 (+7d) | 2027-01-17 → 2027-01-24 (+7d) | 40d → 34d |
| 5 | **Potable Water Tank** |  | 2027-03-14 → 2027-03-21 (+7d) |  |
| 1 | **Eearth Work** |  | 2027-01-05 → 2027-01-12 (+7d) |  |
| CO-UB-PWT-110 | Soil replacement Up to tank formation level for Potable Water Tank | 2026-12-26 → 2027-01-02 (+7d) | 2027-01-05 → 2027-01-12 (+7d) | -21d → -27d |
| 2 | **Structural Work** | 2027-01-06 → 2027-01-13 (+7d) | 2027-02-22 → 2027-03-01 (+7d) |  |
| CO-UB-PWT-120 | Plain Concrete works for Potable Water Tank | 2027-01-06 → 2027-01-13 (+7d) | 2027-01-13 → 2027-01-20 (+7d) | -21d → -27d |
| CO-UB-PWT-130 | Form work for Tank Foundation for Potable Water Tank | 2027-01-14 → 2027-01-21 (+7d) | 2027-01-27 → 2027-02-03 (+7d) | -21d → -27d |
| CO-UB-PWT-140 | Steel Reinforcement work for Tank Foundation for Potable Water Tank | 2027-01-28 → 2027-02-04 (+7d) | 2027-02-10 → 2027-02-17 (+7d) | -21d → -27d |
| CO-UB-PWT-150 | Casting concrete for Tank Foundation for Potable Water Tank | 2027-02-11 → 2027-02-18 (+7d) | 2027-02-22 → 2027-03-01 (+7d) | -21d → -27d |
| 3 | **Tank Shell Erection&Roof Installation** | 2027-02-23 → 2027-03-02 (+7d) | 2027-03-14 → 2027-03-21 (+7d) |  |
| CO-UB-PWT-170 | shell erection for Potable Water Tank | 2027-02-23 → 2027-03-02 (+7d) | 2027-03-14 → 2027-03-21 (+7d) | -21d → -27d |
| 2 | **IrrigationTank** |  | 2027-02-23 → 2027-03-02 (+7d) |  |
| 1 | **Eearth Work** |  | 2027-01-05 → 2027-01-12 (+7d) |  |
| CO-UB-IRT-150 | Soil replacement Up to tank formation level for Irrigation Tank | 2026-12-26 → 2027-01-02 (+7d) | 2027-01-05 → 2027-01-12 (+7d) | -8d → -14d |
| 2 | **Structural Work** | 2027-01-06 → 2027-01-13 (+7d) | 2027-02-07 → 2027-02-14 (+7d) |  |
| CO-UB-IRT-160 | Plain Concrete works for Irrigation Tank | 2027-01-06 → 2027-01-13 (+7d) | 2027-01-09 → 2027-01-16 (+7d) | -8d → -14d |
| CO-UB-IRT-170 | Form work for Tank Foundation for Irrigation Tank | 2027-01-10 → 2027-01-17 (+7d) | 2027-01-20 → 2027-01-27 (+7d) | -8d → -14d |
| CO-UB-IRT-180 | Steel Reinforcement work for Tank Foundation for Irrigation Tank | 2027-01-21 → 2027-01-28 (+7d) | 2027-02-02 → 2027-02-09 (+7d) | -8d → -14d |
| CO-UB-IRT-190 | Casting concrete for Tank Foundation for Irrigation Tank | 2027-02-03 → 2027-02-10 (+7d) | 2027-02-07 → 2027-02-14 (+7d) | -8d → -14d |
| 3 | **Tank Shell Erection&Roof Installation** | 2027-02-08 → 2027-02-15 (+7d) | 2027-02-23 → 2027-03-02 (+7d) |  |

| ID | Task | Start | Finish | Total float |
| --- | --- | --- | --- | --- |
| CO-UB-IRT-210 | shell erection for Irrigation Tank | 2027-02-08 → 2027-02-15 (+7d) | 2027-02-23 → 2027-03-02 (+7d) | -8d → -14d |
| 1 | **Control Room** |  | 2027-05-05 → 2027-05-12 (+7d) |  |
| 5 | **Civil Work** |  | 2027-01-11 → 2027-01-18 (+7d) |  |
| CO-UB-CR-140 | Pouring Beams and Slab For Control Room |  | 2027-01-11 → 2027-01-18 (+7d) | -58d → -64d |
| 6 | **Finishing Work** | 2027-01-12 → 2027-01-19 (+7d) | 2027-05-05 → 2027-05-12 (+7d) |  |
| 1 | **Architictural work** | 2027-01-12 → 2027-01-19 (+7d) | 2027-03-01 → 2027-03-08 (+7d) |  |
| CO-UB-CR-150 | Brick Work For Control Room | 2027-01-12 → 2027-01-19 (+7d) | 2027-01-23 → 2027-01-30 (+7d) | -58d → -64d |
| CO-UB-CR-160 | Thermal & Moisture Protection Work for Control Room | 2027-01-24 → 2027-01-31 (+7d) | 2027-01-31 → 2027-02-07 (+7d) | -58d → -64d |
| CO-UB-CR-200 | Install For Curtian Wall and Windows and Doors | 2027-02-01 → 2027-02-08 (+7d) | 2027-02-08 → 2027-02-15 (+7d) | -58d → -64d |
| CO-UB-CR-240 | External Finshing Work (Walls and Floor) | 2027-02-09 → 2027-02-16 (+7d) | 2027-02-17 → 2027-02-24 (+7d) | -58d → -64d |
| CO-UB-CR-250 | Internal Finshing Work (Walls,Floor and Ceiling) | 2027-02-18 → 2027-02-25 (+7d) | 2027-03-01 → 2027-03-08 (+7d) | -58d → -64d |
| 3 | **Mechanical Work** | 2027-01-24 → 2027-01-31 (+7d) | 2027-04-20 → 2027-04-27 (+7d) |  |
| 3 | **HVAC System** | 2027-01-24 → 2027-01-31 (+7d) | 2027-04-20 → 2027-04-27 (+7d) |  |
| CO-UB-CR-170 | Install of Refrigerant Piping ( fabricated metal ducts with flanges complete with supports, vanes, dampers ) | 2027-01-24 → 2027-01-31 (+7d) | 2027-02-16 → 2027-02-23 (+7d) | -57d → -63d |
| CO-UB-CR-260 | Install of Mini split actual and Ducted split | 2027-03-02 → 2027-03-13 (+11d) | 2027-03-28 → 2027-04-04 (+7d) | -51d → -57d |
| CO-UB-CR-310 | Install of Air Grills 150mm x150mm and Air Diffuser 600mm x 600mm | 2027-03-29 → 2027-04-05 (+7d) | 2027-04-20 → 2027-04-27 (+7d) | -51d → -57d |
| 4 | **Fire Fitting System** | 2027-02-17 → 2027-02-24 (+7d) | 2027-03-08 → 2027-03-18 (+10d) |  |
| CO-UB-CR-180 | Installation & Testing of 2 hours Fire rated system for closing the openings between rooms with help of Rock wool | 2027-02-17 → 2027-02-24 (+7d) | 2027-02-28 → 2027-03-07 (+7d) | -57d → -63d |
| CO-UB-CR-270 | Install Fire Extinguishers | 2027-03-02 → 2027-03-13 (+11d) | 2027-03-08 → 2027-03-18 (+10d) | -52d → -58d |
| 1 | **Plumbing System** | 2027-03-02 → 2027-03-13 (+11d) | 2027-03-18 → 2027-03-25 (+7d) |  |
| CO-UB-CR-370 | Install of Sanitary Wares Including Relevant Pipes and Fittings | 2027-03-02 → 2027-03-13 (+11d) | 2027-03-18 → 2027-03-25 (+7d) | -58d → -64d |
| 4 | **Electrical Work** | 2027-03-02 → 2027-03-13 (+11d) | 2027-04-28 → 2027-05-05 (+7d) |  |
| 1 | **LV Power** | 2027-03-02 → 2027-03-13 (+11d) | 2027-04-24 → 2027-05-01 (+7d) |  |
| CO-UB-CR-190 | Install of Distribution board For Control Room | 2027-03-02 → 2027-03-13 (+11d) | 2027-03-16 → 2027-03-23 (+7d) | -54d → -60d |
| CO-UB-CR-220 | Install of Earting Cable for Control Room | 2027-03-17 → 2027-03-24 (+7d) | 2027-04-01 → 2027-04-08 (+7d) | -54d → -60d |
| CO-UB-CR-280 | Install of Socket outlet and LED Lighting | 2027-04-03 → 2027-04-10 (+7d) | 2027-04-24 → 2027-05-01 (+7d) | -54d → -60d |
| 3 | **Fire Detection And Alarm System** | 2027-03-20 → 2027-03-27 (+7d) | 2027-04-28 → 2027-05-05 (+7d) |  |
| CO-UB-CR-210 | Install of 2C x 1.5 Sqm FR Rated Armored - Cable For Loop Wiring | 2027-03-20 → 2027-03-27 (+7d) | 2027-03-23 → 2027-03-30 (+7d) | -58d → -64d |
| CO-UB-CR-230 | Install of Transmission Communication cable - Fiber Optics 12Core | 2027-03-24 → 2027-03-31 (+7d) | 2027-03-28 → 2027-04-04 (+7d) | -58d → -64d |
| CO-UB-CR-290 | Install of power supply system for fire alarm control panel | 2027-03-29 → 2027-04-05 (+7d) | 2027-04-01 → 2027-04-08 (+7d) | -58d → -64d |
| CO-UB-CR-300 | Install of Fire Alarm Control panel | 2027-04-03 → 2027-04-10 (+7d) | 2027-04-08 → 2027-04-15 (+7d) | -58d → -64d |
| CO-UB-CR-320 | Installation of the addressable manual call point with operation safety glass breaking | 2027-04-10 → 2027-04-17 (+7d) | 2027-04-12 → 2027-04-19 (+7d) | -58d → -64d |
| CO-UB-CR-330 | Install of the photoelectric heat & smoke detector | 2027-04-13 → 2027-04-20 (+7d) | 2027-04-18 → 2027-04-25 (+7d) | -58d → -64d |
| CO-UB-CR-340 | Install of Sounder With Beacon | 2027-04-19 → 2027-04-26 (+7d) | 2027-04-24 → 2027-05-01 (+7d) | -58d → -64d |
| CO-UB-CR-350 | Install of Addressable Control module | 2027-04-25 → 2027-05-02 (+7d) | 2027-04-28 → 2027-05-05 (+7d) | -58d → -64d |
| 2 | **Furnitures work** | 2027-04-29 → 2027-05-06 (+7d) | 2027-05-05 → 2027-05-12 (+7d) |  |
| CO-UB-CR-360 | Office Chairs,Tables and Stand | 2027-04-29 → 2027-05-06 (+7d) | 2027-05-05 → 2027-05-12 (+7d) | -58d → -64d |
| ML | **Softscape and Planting Works** | 2027-05-06 → 2027-05-13 (+7d) | 2027-06-21 → 2027-06-28 (+7d) |  |
| CO-LS-PL-160 | Planting Works: Planting including plants, forming planting beds, suitable soil, supports, and protection | 2027-05-06 → 2027-05-13 (+7d) | 2027-05-29 → 2027-06-05 (+7d) | -101d → -107d |
| CO-LS-SF-170 | Site Furnishings (Seating Bench,Stone Boulders and Gravel) | 2027-05-30 → 2027-06-06 (+7d) | 2027-06-21 → 2027-06-28 (+7d) | -101d → -107d |
| 6 | **Storm Drainage Ponds** |  | 2027-06-01 → 2027-06-08 (+7d) |  |
| CO-SD-PO-100-P1 | Excavation & Filling Works - PART 1 for Storm Drainage Ponds |  | 2027-04-07 → 2027-04-14 (+7d) | -122d → -128d |
| CO-SD-PO-110-P1 | Finished Grouted Riprap - PART 1 for Storm Drainage Ponds |  | 2027-04-17 → 2027-04-24 (+7d) | -122d → -128d |
| CO-SD-PO-100-P2 | Excavation & Filling Works - PART 2 for Storm Drainage Ponds | 2027-04-18 → 2027-04-25 (+7d) | 2027-05-06 → 2027-05-13 (+7d) | -117d → -123d |
| CO-SD-PO-110-P2 | Finished Grouted Riprap - PART 2 for Storm Drainage Ponds | 2027-05-08 → 2027-05-20 (+12d) | 2027-06-01 → 2027-06-08 (+7d) | -117d → -123d |
| 1 | **Boundary Fence and Gaurd Room** |  | 2027-06-27 → 2027-07-04 (+7d) |  |
| 1 | **Gaurd Room Work** |  | 2027-06-27 → 2027-07-04 (+7d) |  |
| 1 | **Civil Work** |  | 2027-05-24 → 2027-05-31 (+7d) |  |
| A1000 | Excavation Work For Guard Room Foundation |  | 2027-05-06 → 2027-05-13 (+7d) | -114d → -120d |
| A1010 | Pouring for Plain Concrete for Guard Room |  | 2027-05-08 → 2027-05-20 (+12d) | -114d → -120d |
| A1030 | Pouring R.C Columns for Guard Room |  | 2027-05-20 → 2027-05-27 (+7d) | -114d → -120d |
| A1020 | Pouring R.C Footing for Guard Room | 2027-05-09 → 2027-05-22 (+13d) | 2027-05-11 → 2027-05-24 (+13d) | -114d → -120d |
| A1040 | Pouring Beams and Slab for Guard Room | 2027-05-22 → 2027-05-29 (+7d) | 2027-05-24 → 2027-05-31 (+7d) | -114d → -120d |
| 2 | **Finishing Work** | 2027-05-25 → 2027-06-01 (+7d) | 2027-06-27 → 2027-07-04 (+7d) |  |
| 1 | **Architectural work** | 2027-05-25 → 2027-06-01 (+7d) | 2027-06-24 → 2027-07-01 (+7d) |  |
| A1050 | Brick Works for Architectural Works for Guard Rooms | 2027-05-25 → 2027-06-01 (+7d) | 2027-05-31 → 2027-06-07 (+7d) | -114d → -120d |
| A1060 | Thermal & Moisture Protection Work for Architectural Works for Guard Rooms | 2027-06-01 → 2027-06-08 (+7d) | 2027-06-06 → 2027-06-13 (+7d) | -114d → -120d |
| A1080 | External Finshing Work (Walls and Floor) for Architectural Works for Guard Rooms | 2027-06-13 → 2027-06-20 (+7d) | 2027-06-14 → 2027-06-21 (+7d) | -110d → -116d |
| A1090 | Internal Finshing Work (Walls,Floor and Ceiling) for Architectural Works for Guard Rooms | 2027-06-13 → 2027-06-20 (+7d) | 2027-06-19 → 2027-06-26 (+7d) | -114d → -120d |
| A1070 | Installation of Windows and Doors for Architectural Works for Guard Rooms | 2027-06-20 → 2027-06-27 (+7d) | 2027-06-24 → 2027-07-01 (+7d) | -114d → -120d |
| 3 | **Mechanical Work** | 2027-06-07 → 2027-06-14 (+7d) | 2027-06-15 → 2027-06-22 (+7d) |  |
| 1 | **Drainage System** | 2027-06-07 → 2027-06-14 (+7d) | 2027-06-15 → 2027-06-22 (+7d) |  |
| A1110 | Installation of Sewage Piping System complete with joints, angles, reducer etc. for Drainage System for Guard Rooms | 2027-06-07 → 2027-06-14 (+7d) | 2027-06-10 → 2027-06-17 (+7d) | -113d → -119d |
| A1120 | Installation of all Sanitary Ware for Drainage System for Guard Rooms | 2027-06-12 → 2027-06-19 (+7d) | 2027-06-15 → 2027-06-22 (+7d) | -106d → -112d |
| 2 | **Water Supply System** | 2027-06-07 → 2027-06-14 (+7d) | 2027-06-15 → 2027-06-22 (+7d) |  |
| A1140 | Installation of Water Piping System complete with joints, angles, reducer etc. for Water Supply System for Guard Rooms | 2027-06-07 → 2027-06-14 (+7d) | 2027-06-09 → 2027-06-16 (+7d) | -112d → -118d |
| A1180 | Installation oF Water Supply Wares (Water Heater, Faucets, Etc..) for Water Supply System for Guard Rooms | 2027-06-10 → 2027-06-17 (+7d) | 2027-06-12 → 2027-06-19 (+7d) | -103d → -109d |
| A1240 | Installation of water tanks for Water Supply System for Guard Rooms | 2027-06-15 → 2027-06-22 (+7d) | 2027-06-15 → 2027-06-22 (+7d) | -104d → -110d |
| 3 | **HVAC System** | 2027-06-07 → 2027-06-14 (+7d) | 2027-06-09 → 2027-06-16 (+7d) |  |
| A1200 | Installation of AC Piping for HVAC System for Guard Rooms | 2027-06-07 → 2027-06-14 (+7d) | 2027-06-08 → 2027-06-15 (+7d) | -111d → -117d |

| ID | Task | Start | Finish | Total float |
| --- | --- | --- | --- | --- |
| A1190 | Installation of AC Units for HVAC System for Guard Rooms | 2027-06-09 → 2027-06-16 (+7d) | 2027-06-09 → 2027-06-16 (+7d) | -101d → -107d |
| 4 | **Fire Fighting System** | 2027-06-07 → 2027-06-14 (+7d) | 2027-06-09 → 2027-06-16 (+7d) |  |
| A1220 | Installation & Testing of 2 hours Fire Fighting system for Fire Fighting System for Guard Rooms | 2027-06-07 → 2027-06-14 (+7d) | 2027-06-08 → 2027-06-15 (+7d) | -111d → -117d |
| A1230 | Installation of Fire Extinguishers for Fire Fighting System for Guard Rooms | 2027-06-09 → 2027-06-16 (+7d) | 2027-06-09 → 2027-06-16 (+7d) | -101d → -107d |
| 4 | **Electrical Work** | 2027-06-07 → 2027-06-14 (+7d) | 2027-06-19 → 2027-06-26 (+7d) |  |
| 1 | **LV Power** | 2027-06-07 → 2027-06-14 (+7d) | 2027-06-16 → 2027-06-23 (+7d) |  |
| A1250 | Installation of Conduits and Cables for LV System for Gaurd Rooms | 2027-06-07 → 2027-06-14 (+7d) | 2027-06-12 → 2027-06-19 (+7d) | -114d → -120d |
| A1260 | Install of Eletrical Finishes (DBs, Sockets and Lightings) and Termination for LV System for Gaurd Rooms | 2027-06-13 → 2027-06-20 (+7d) | 2027-06-16 → 2027-06-23 (+7d) | -107d → -113d |
| 3 | **Fire Detection And Alarm System** | 2027-06-07 → 2027-06-14 (+7d) | 2027-06-19 → 2027-06-26 (+7d) |  |
| A1340 | Installation of Conduits and Cables for Fire Alarm System for Gaurd Rooms | 2027-06-07 → 2027-06-14 (+7d) | 2027-06-12 → 2027-06-19 (+7d) | -114d → -120d |
| A1350 | Installation of Fire Alarm Devices (AMCP, SD,HD, Sounder and Panels) for Fire Alarm System for Gaurd Rooms | 2027-06-13 → 2027-06-20 (+7d) | 2027-06-19 → 2027-06-26 (+7d) | -109d → -115d |
| 2 | **Furniture work** | 2027-06-26 → 2027-07-03 (+7d) | 2027-06-27 → 2027-07-04 (+7d) |  |
| A1100 | Office Chairs,Tables and Stand | 2027-06-26 → 2027-07-03 (+7d) | 2027-06-27 → 2027-07-04 (+7d) | -114d → -120d |
| 3 | **Boundary Fence** |  | 2027-06-10 → 2027-06-17 (+7d) |  |
| 2 | **Boundary Fence - South** |  | 2027-04-29 → 2027-05-06 (+7d) |  |
| 1 | **Civil Work** |  | 2027-01-26 → 2027-02-02 (+7d) |  |
| CO-SU-FE-N-CI-130 | Pouring R.C Columns For Boundary Fence South |  | 2027-01-12 → 2027-01-19 (+7d) | -74.42d → -80.42d |
| CO-SU-FE-N-CI-140 | Pouring Beams For Boundary Fence South | 2027-01-12 → 2027-01-19 (+7d) | 2027-01-26 → 2027-02-02 (+7d) | -74.42d → -80.42d |
| 5 | **Finishing Work** |  | 2027-04-29 → 2027-05-06 (+7d) |  |
| 4 | **Architictural work** |  | 2027-04-05 → 2027-04-12 (+7d) |  |
| CO-SU-FE-N-AR-100 | Install Brick Work For Boundary Fence South |  | 2027-02-17 → 2027-02-24 (+7d) | -74.42d → -80.42d |
| CO-SU-FE-N-AR-110 | Insulation For Boundary Fence South | 2027-03-04 → 2027-03-15 (+11d) | 2027-03-25 → 2027-04-01 (+7d) | -74.42d → -80.42d |
| CO-SU-FE-N-AR-120 | Install all the Relevant Cladding and Finishes For Boundary Fence South | 2027-03-25 → 2027-04-01 (+7d) | 2027-04-05 → 2027-04-12 (+7d) | -71.42d → -77.42d |
| 3 | **Electrical Work** | 2027-02-17 → 2027-02-24 (+7d) | 2027-04-29 → 2027-05-06 (+7d) |  |
| CO-SU-FE-N-EL-240 | Installation of Conduits and Cables for Electricial Works For Boundary Fence South | 2027-02-17 → 2027-02-24 (+7d) | 2027-03-04 → 2027-03-15 (+11d) | -74.42d → -80.42d |
| CO-SU-FE-N-EL-250 | Install, fixings, testing of all electrical finishes and lightings for Electricial Works For Boundary Fence South | 2027-04-05 → 2027-04-12 (+7d) | 2027-04-29 → 2027-05-06 (+7d) | -71.42d → -77.42d |
| 1 | **Boundary Fence - West** |  | 2027-05-10 → 2027-05-23 (+13d) |  |
| 5 | **Finishing Work** |  | 2027-05-10 → 2027-05-23 (+13d) |  |
| 4 | **Architictural work** |  | 2027-04-22 → 2027-04-29 (+7d) |  |
| CO-SU-FE-N-AR-150 | Install all the Relevant Cladding and Finishes For Boundary Fence West |  | 2027-04-22 → 2027-04-29 (+7d) | -74.42d → -80.42d |
| CO-SU-FE-N-AR-140 | Insulation For Boundary Fence West |  | 2027-04-08 → 2027-04-15 (+7d) | -74.42d → -80.42d |
| 3 | **Electrical Work** | 2027-03-04 → 2027-03-15 (+11d) | 2027-05-10 → 2027-05-23 (+13d) |  |
| CO-SU-FE-N-EL-260 | Installation of Conduits and Cables for Electricial Works For Boundary Fence West | 2027-03-04 → 2027-03-15 (+11d) | 2027-03-17 → 2027-03-24 (+7d) | -67.42d → -73.42d |
| CO-SU-FE-N-EL-270 | Install, fixings, testing of all electrical finishes and lightings for Electricial Works For Boundary Fence West | 2027-04-29 → 2027-05-06 (+7d) | 2027-05-10 → 2027-05-23 (+13d) | -71.42d → -77.42d |
| 3 | **Boundary Fence - North** |  | 2027-05-06 → 2027-05-13 (+7d) |  |
| 1 | **Civil Work** |  | 2027-02-09 → 2027-02-16 (+7d) |  |
| CO-SU-FE-N-CI-240 | Pouring Beams For Boundary Fence North | 2027-01-26 → 2027-02-02 (+7d) | 2027-02-09 → 2027-02-16 (+7d) | -33.42d → -39.42d |
| 5 | **Finishing Work** |  | 2027-05-06 → 2027-05-13 (+7d) |  |
| 4 | **Architictural work** |  | 2027-04-29 → 2027-05-06 (+7d) |  |
| CO-SU-FE-N-AR-180 | Install all the Relevant Cladding and Finishes For Boundary Fence North |  | 2027-04-29 → 2027-05-06 (+7d) | -74.42d → -80.42d |
| CO-SU-FE-N-AR-170 | Insulation For Boundary Fence North |  | 2027-04-21 → 2027-04-28 (+7d) | -73.42d → -79.42d |
| 3 | **Electrical Work** | 2027-03-17 → 2027-03-24 (+7d) | 2027-05-06 → 2027-05-13 (+7d) |  |
| CO-SU-FE-N-EL-280 | Installation of Conduits and Cables for Electricial Works For Boundary Fence North | 2027-03-17 → 2027-03-24 (+7d) | 2027-03-25 → 2027-04-01 (+7d) | -61.42d → -67.42d |
| CO-SU-FE-N-EL-290 | Install, fixings, testing of all electrical finishes and lightings for Electricial Works For Boundary Fence North | 2027-04-29 → 2027-05-06 (+7d) | 2027-05-06 → 2027-05-13 (+7d) | -71.42d → -77.42d |
| 4 | **Boundary Fence - East** |  | 2027-06-10 → 2027-06-17 (+7d) |  |
| 1 | **Civil Work** |  | 2027-02-21 → 2027-02-28 (+7d) |  |
| CO-SU-FE-N-CI-280 | Pouring R.C Columns For Boundary Fence East |  | 2027-01-31 → 2027-02-07 (+7d) | -21.42d → -27.42d |
| CO-SU-FE-N-CI-290 | Pouring Beams For Boundary Fence East | 2027-02-09 → 2027-02-16 (+7d) | 2027-02-21 → 2027-02-28 (+7d) | -29.42d → -35.42d |
| 5 | **Finishing Work** |  | 2027-06-10 → 2027-06-17 (+7d) |  |
| 4 | **Architictural work** |  | 2027-06-05 → 2027-06-12 (+7d) |  |
| CO-SU-FE-N-AR-210 | Install all the Relevant Cladding and Finishes For Boundary Fence East | 2027-05-26 → 2027-06-02 (+7d) | 2027-06-05 → 2027-06-12 (+7d) | -92d → -98d |
| 3 | **Electrical Work** | 2027-05-09 → 2027-05-22 (+13d) | 2027-06-10 → 2027-06-17 (+7d) |  |
| CO-SU-FE-N-EL-300 | Installation of Conduits and Cables for Electricial Works For Boundary Fence East | 2027-05-09 → 2027-05-22 (+13d) | 2027-05-25 → 2027-06-01 (+7d) | -92d → -98d |
| CO-SU-FE-N-EL-310 | Install, fixings, testing of all electrical finishes and lightings for Electricial Works For Boundary Fence East | 2027-06-06 → 2027-06-13 (+7d) | 2027-06-10 → 2027-06-17 (+7d) | -92d → -98d |
| TC | **Testing and Comissioning** | 2027-06-29 → 2027-07-06 (+7d) | 2027-07-26 → 2027-08-02 (+7d) |  |
| INF | **Infrastructure Networks** | 2027-07-06 → 2027-07-13 (+7d) | 2027-07-26 → 2027-08-02 (+7d) |  |
| LV | **Low Voltage Network** | 2027-07-06 → 2027-07-13 (+7d) | 2027-07-19 → 2027-07-26 (+7d) |  |
| TC-LV-100 | Testing and Commissioning of Low Voltage Network | 2027-07-06 → 2027-07-13 (+7d) | 2027-07-19 → 2027-07-26 (+7d) | -116d → -122d |
| PW1 | **Irrigation Network** | 2027-07-06 → 2027-07-13 (+7d) | 2027-07-19 → 2027-07-26 (+7d) |  |
| T/C-IR | Testing and Commissioning of Irrigation Network | 2027-07-06 → 2027-07-13 (+7d) | 2027-07-19 → 2027-07-26 (+7d) | -116d → -122d |
| PW11 | **TSE Network** | 2027-07-06 → 2027-07-13 (+7d) | 2027-07-19 → 2027-07-26 (+7d) |  |
| T/C-TSE-10 | Testing and Commissioning of TSE Network | 2027-07-06 → 2027-07-13 (+7d) | 2027-07-19 → 2027-07-26 (+7d) | -116d → -122d |
| PW | **Potable Water Network** | 2027-07-06 → 2027-07-13 (+7d) | 2027-07-19 → 2027-07-26 (+7d) |  |
| T/C-PW | Testing and Commissioning of Potable Water Network | 2027-07-06 → 2027-07-13 (+7d) | 2027-07-19 → 2027-07-26 (+7d) | -116d → -122d |
| SW | **Sewage Network** | 2027-07-06 → 2027-07-13 (+7d) | 2027-07-19 → 2027-07-26 (+7d) |  |
| T/C-SW | Testing and Commissioning of Sewage Network | 2027-07-06 → 2027-07-13 (+7d) | 2027-07-19 → 2027-07-26 (+7d) | -116d → -122d |
| SD | **Storm Drainage Network** | 2027-07-06 → 2027-07-13 (+7d) | 2027-07-26 → 2027-08-02 (+7d) |  |
| T/C-DPO | Testing and Commissioning of Storm Drainage Ponds | 2027-07-06 → 2027-07-13 (+7d) | 2027-07-19 → 2027-07-26 (+7d) | -116d → -122d |
| T/C-SD | Testing and Commissioning of Storm Drainage Ponds and Storm Drainage Network | 2027-07-13 → 2027-07-20 (+7d) | 2027-07-26 → 2027-08-02 (+7d) | -122d → -128d |
| SL | **Street Lighting Network** | 2027-07-06 → 2027-07-13 (+7d) | 2027-07-19 → 2027-07-26 (+7d) |  |

| ID | Task | Start | Finish | Total float |
| --- | --- | --- | --- | --- |
| T/C-SL | Testing and Commissioning of Street Lighting Network | 2027-07-06 → 2027-07-13 (+7d) | 2027-07-19 → 2027-07-26 (+7d) | -116d → -122d |
| TE | **Telecom and Light Current Network** | 2027-07-06 → 2027-07-13 (+7d) | 2027-07-19 → 2027-07-26 (+7d) |  |
| T/C-TE | Testing and Commissioning of Telecom and Light Current Networks | 2027-07-06 → 2027-07-13 (+7d) | 2027-07-19 → 2027-07-26 (+7d) | -116d → -122d |
| MV | **Medium Voltage Network** | 2027-07-06 → 2027-07-13 (+7d) | 2027-07-19 → 2027-07-26 (+7d) |  |
| T/C-MV | Testing and Commissioning of Medium Voltage Network | 2027-07-06 → 2027-07-13 (+7d) | 2027-07-19 → 2027-07-26 (+7d) | -116d → -122d |
| RD | **Road Works** | 2027-07-06 → 2027-07-13 (+7d) | 2027-07-19 → 2027-07-26 (+7d) |  |
| T/C-RD | Testing and Commissioning of Road Works | 2027-07-06 → 2027-07-13 (+7d) | 2027-07-19 → 2027-07-26 (+7d) | -117d → -123d |
| 1 | **Utility Buildings** | 2027-06-29 → 2027-07-06 (+7d) | 2027-07-26 → 2027-08-02 (+7d) |  |
| T/C-CTV | Testing and Commissioning of Guard Room and Boundary Fence | 2027-06-29 → 2027-07-06 (+7d) | 2027-07-17 → 2027-07-24 (+7d) | -115d → -121d |
| T/C-CTV20 | Testing and Commissioning of Softscape And Planting | 2027-06-29 → 2027-07-06 (+7d) | 2027-07-17 → 2027-07-24 (+7d) | -107d → -113d |
| T/C-CTV10 | Testing and Commissioning of Utility Buildings | 2027-07-08 → 2027-07-15 (+7d) | 2027-07-26 → 2027-08-02 (+7d) | -115d → -121d |
| 1 | **Handing over and close out** | 2027-07-06 → 2027-07-13 (+7d) | 2027-08-03 → 2027-08-10 (+7d) |  |
| 2 | **As-Built** | 2027-07-06 → 2027-07-13 (+7d) | 2027-07-28 → 2027-08-04 (+7d) |  |
| HO-100 | Submission As-Built Drawing For Sewage Network | 2027-07-06 → 2027-07-13 (+7d) | 2027-07-17 → 2027-07-24 (+7d) | -107d → -113d |
| HO-130 | Submission As-Built Drawing For Pond | 2027-07-06 → 2027-07-13 (+7d) | 2027-07-17 → 2027-07-24 (+7d) | -107d → -113d |
| HO-140 | Submission As-Built Drawing For Roads Network | 2027-07-06 → 2027-07-13 (+7d) | 2027-07-17 → 2027-07-24 (+7d) | -107d → -113d |
| HO-150 | Submission As-Built Drawing For Street Lighting Network | 2027-07-06 → 2027-07-13 (+7d) | 2027-07-17 → 2027-07-24 (+7d) | -107d → -113d |
| HO-160 | Submission As-Built Drawing For Telecom and Light Current Networks | 2027-07-06 → 2027-07-13 (+7d) | 2027-07-17 → 2027-07-24 (+7d) | -107d → -113d |
| HO-180 | Submission As-Built Drawing For Irrigation Network | 2027-07-06 → 2027-07-13 (+7d) | 2027-07-17 → 2027-07-24 (+7d) | -107d → -113d |
| HO-200 | Submission As-Built Drawing For Storm Network | 2027-07-13 → 2027-07-20 (+7d) | 2027-07-24 → 2027-07-31 (+7d) | -113d → -119d |
| HO-170 | Submission As-Built Drawing For Medium Voltage Network | 2027-07-20 → 2027-07-27 (+7d) | 2027-07-27 → 2027-08-03 (+7d) | -116d → -122d |
| HO-190 | As-Built Drawing For Potable Water Network | 2027-07-20 → 2027-07-27 (+7d) | 2027-07-27 → 2027-08-03 (+7d) | -116d → -122d |
| HO-210 | Submission As-Built Drawing For Utility Buildings | 2027-07-20 → 2027-07-27 (+7d) | 2027-07-28 → 2027-08-04 (+7d) | -117d → -123d |
| 1 | **De-Mobilization Works** | 2027-07-08 → 2027-07-15 (+7d) | 2027-07-28 → 2027-08-04 (+7d) |  |
| HO-230 | Remove Temporary Car Shades | 2027-07-08 → 2027-07-15 (+7d) | 2027-07-19 → 2027-07-26 (+7d) | -109d → -115d |
| HO-220 | Removing Portable Caravan | 2027-07-12 → 2027-07-19 (+7d) | 2027-07-19 → 2027-07-26 (+7d) | -117d → -123d |
| HO-120 | Remove material stock & Storage area | 2027-07-20 → 2027-07-27 (+7d) | 2027-07-28 → 2027-08-04 (+7d) | -117d → -123d |
| 3 | **Handing Over** | 2027-07-11 → 2027-07-18 (+7d) | 2027-08-03 → 2027-08-10 (+7d) |  |
| HO-240 | Final Walkthrough and Inspection | 2027-07-11 → 2027-07-18 (+7d) | 2027-07-19 → 2027-07-26 (+7d) | -109d → -115d |
| HO-250 | Review B.O.Q Qty. to ensure compliance with the actual status | 2027-07-11 → 2027-07-18 (+7d) | 2027-07-19 → 2027-07-26 (+7d) | -109d → -115d |
| HO-260 | Review FIR Approval to ensure compliance with the actual status | 2027-07-11 → 2027-07-18 (+7d) | 2027-07-19 → 2027-07-26 (+7d) | -109d → -115d |
| HO-270 | Review the sample drawing to ensure compliance with the actual status | 2027-07-11 → 2027-07-18 (+7d) | 2027-07-19 → 2027-07-26 (+7d) | -117d → -123d |
| HO-280 | Punch List Completion | 2027-07-20 → 2027-07-27 (+7d) | 2027-07-28 → 2027-08-04 (+7d) | -117d → -123d |
| HO-110 | Final Testing Work | 2027-07-27 → 2027-08-03 (+7d) | 2027-08-03 → 2027-08-10 (+7d) | -122d → -128d |
